# AIStudio GPT CoT JSON

Schedule from MS Project, 2025-06-16 to 2026-06-12, costs in $.

## Calendars

- Standard: Mon-Fri 08:00-12:00, 13:00-17:00; Sat-Sun off.

## Resources

| Resource | Rate |
| --- | --- |
| Mobilization & Management | 100 |
| Civils Subcontractor | 50 |
| Concrete Subcontractor | 50 |
| Plumbing Subcontractor | 40 |
| Façade Subcontractor | 60 |
| Electrical Subcontractor | 45 |
| HVAC Subcontractor | 45 |
| Internal Finishes Subcontractor | 50 |
| Excavator | 1000 |
| Concrete Pump | 1500 |
| Electrical Generators | 250 |
| Material Movement on site | 100 |

## Schedule

| ID | Task | Duration | Start | Finish | Predecessors | Total slack | Free slack | Constraint | Resources | Work | Cost |
| --- | --- | --- | --- | --- | --- | --- | --- | --- | --- | --- | --- |
| 1 | Project Start Mobilization | 10d | 2025-06-16 | 2025-06-27 |  | 0d |  | start no earlier than 2025-06-15 | Mobilization & Management [500%]; Material Movement on site [500%]; Electrical Generators [1000%] | 400h | 43,000 |
| 2 | Earth Works | 40d | 2025-06-16 | 2025-08-08 | 1SS | 0d |  | start no earlier than 2025-06-15 | Electrical Generators [200%]; Civils Subcontractor [1500%]; Excavator [200%] | 4800h | 242,500 |
| 3 | Concrete Skeleton Works | 260d | 2025-06-16 | 2026-06-12 | 2SS | 0d |  | start no earlier than 2025-06-15 | Electrical Generators [500%]; Concrete Subcontractor [2000%]; Material Movement on site [300%]; Concrete Pump [200%] | 41600h | 2,084,550 |
| 4 | Plumbing Water Supply First Fix | 45d | 2025-09-08 | 2025-11-07 | 3SS+60d | 115d | 0d | start no earlier than 2025-06-15 | Material Movement on site [200%]; Electrical Generators [300%]; Plumbing Subcontractor [1500%] | 5400h | 216,950 |
| 5 | Plumbing Drainage First Fix | 40d | 2025-11-10 | 2026-01-02 | 4 | 115d | 0d | start no earlier than 2025-06-15 | Electrical Generators [300%]; Material Movement on site [200%]; Plumbing Subcontractor [1500%] | 4800h | 192,950 |
| 6 | Exterior Walls Installation | 110d | 2025-07-28 | 2025-12-26 | 3SS+30d | 120d | 0d | start no earlier than 2025-06-15 | Façade Subcontractor [2500%]; Material Movement on site [300%] | 22000h | 1,320,300 |
| 7 | Exterior Plastering Works | 70d | 2025-09-22 | 2025-12-26 | 6FF | 120d | 5d | start no earlier than 2025-06-15 | Façade Subcontractor [1500%]; Material Movement on site [300%] | 8400h | 504,300 |
| 8 | Waterproofing for Wet Areas | 25d | 2025-12-01 | 2026-01-02 | 5FF, 13SS+15d | 115d | 5d | start no earlier than 2025-06-15 | Internal Finishes Subcontractor [1500%]; Material Movement on site [200%] | 3000h | 150,200 |
| 9 | Electrical Wiring First Fix | 40d | 2025-10-20 | 2025-12-12 | 3SS+70d, 13SS | 130d | 20d | start no earlier than 2025-06-15 | Electrical Subcontractor [1000%]; Electrical Generators [500%]; Material Movement on site [200%] | 3200h | 145,450 |
| 10 | Ceramic Tile Works | 115d | 2025-08-04 | 2026-01-09 | 8FF, 14FF | 110d | 0d | start no earlier than 2025-06-15 | Internal Finishes Subcontractor [2000%]; Electrical Generators [200%]; Material Movement on site [200%] | 18400h | 920,700 |
| 11 | Doors and Windows Installation | 65d | 2025-09-29 | 2025-12-26 | 6FF, 7SS | 120d | 10d | start no earlier than 2025-06-15 | Internal Finishes Subcontractor [500%]; Electrical Generators [200%]; Material Movement on site [200%] | 2600h | 130,700 |
| 12 | Elevator Installation | 40d | 2026-04-20 | 2026-06-12 | 3FF, 11FF | 0d |  | start no earlier than 2025-06-15 | Electrical Subcontractor [500%]; Electrical Generators [400%]; Material Movement on site [300%] | 1600h | 73,300 |
| 13 | Interior Walls Installation | 60d | 2025-10-20 | 2026-01-09 | 3SS+90d, 6SS | 110d | 0d | start no earlier than 2025-06-15 | Internal Finishes Subcontractor [500%]; Electrical Generators [200%]; Material Movement on site [200%] | 2400h | 120,700 |
| 14 | Interior Plastering Works | 45d | 2025-11-10 | 2026-01-09 | 13FF, 4FF, 5FF, 9FF | 110d | 0d | start no earlier than 2025-06-15 | Internal Finishes Subcontractor [500%]; Electrical Generators [200%]; Material Movement on site [200%] | 1800h | 90,700 |
| 15 | Painting Works | 55d | 2025-10-27 | 2026-01-09 | 14FF, 11FF | 110d | 0d | start no earlier than 2025-06-15 | Internal Finishes Subcontractor [500%]; Electrical Generators [200%]; Material Movement on site [200%] | 2200h | 110,700 |
| 16 | Electrical Wiring Second Fix | 30d | 2025-11-10 | 2025-12-19 | 15SS+10d | 125d |  | start no earlier than 2025-06-15 | Electrical Subcontractor [2000%]; Electrical Generators [300%]; Material Movement on site [400%] | 4800h | 217,150 |
| 17 | Plumbing Second Fix | 25d | 2025-12-08 | 2026-01-09 | 10FF, 15SS+5d | 110d |  | start no earlier than 2025-06-15 | Plumbing Subcontractor [1500%]; Electrical Generators [200%]; Material Movement on site [200%] | 3000h | 120,700 |
| 18 | Heating System Second Fix | 35d | 2025-11-03 | 2025-12-19 | 15SS+5d | 125d |  | start no earlier than 2025-06-15 | Electrical Generators [200%]; Material Movement on site [500%]; HVAC Subcontractor [3000%] | 8400h | 379,000 |
