# Bel-Egypt Schedule Rev.1

Schedule from MS Project, 2010-06-01 to 2010-12-30.
Toshiba

## Calendars

- Project: Mon-Thu 08:00-12:00, 13:00-17:00; Fri off; Sat-Sun 08:00-12:00, 13:00-17:00. Exceptions (off unless hours are given): 2010-09-09 to 2010-09-16 (Eid 1), 2010-11-15 to 2010-11-21 (Eid 2).

## Schedule

| ID | WBS | Task | Type | Duration | Start | Finish | Predecessors | Total slack | Free slack | Deadline |
| --- | --- | --- | --- | --- | --- | --- | --- | --- | --- | --- |
| 1 | 1 | **BEL Egypt Project** |  | 170d? | 2010-06-01 | 2010-12-30 |  | 0d |  |  |
| 2 | 1.1 | **01- Project General** |  | 170d | 2010-06-01 | 2010-12-30 |  | 0d |  |  |
| 3 | 1.1.1 | Site Handing Over | milestone | 0d | 2010-06-01 | 2010-06-01 |  | 21d |  |  |
| 4 | 1.1.2 | Advanced Payment Receving | milestone | 0d | 2010-06-01 | 2010-06-01 |  | 21d |  |  |
| 5 | 1.1.3 | Project Start | milestone | 0d | 2010-06-01 | 2010-06-01 |  | 0d |  |  |
| 6 | 1.1.4 | Mobilization |  | 21d | 2010-06-01 | 2010-06-24 | 5 | 149d |  |  |
| 7 | 1.1.5 | Project End | milestone | 0d | 2010-12-30 | 2010-12-30 | 58, 57, 86, 90, 117, 141, 161, 167, 172, 175 | 0d |  | 2010-12-30 |
| 8 | 1.2 | **02- Engineering Phase** |  | 57d? | 2010-06-01 | 2010-08-05 |  | 113d |  |  |
| 9 | 1.2.1 | **Construction Drawings** |  | 25d | 2010-06-01 | 2010-06-29 |  | 118d |  |  |
| 10 | 1.2.1.1 | Civil & Steel Drawings Receving | milestone | 0d | 2010-06-01 | 2010-06-01 |  | 118d | 5d |  |
| 11 | 1.2.1.2 | Archl Drawings Receving | milestone | 0d | 2010-06-01 | 2010-06-01 |  | 133d |  |  |
| 12 | 1.2.1.3 | Plumbing Drawings Receving | milestone | 0d | 2010-06-01 | 2010-06-01 |  | 169d |  |  |
| 13 | 1.2.1.4 | Docklevel Details Drawings | milestone | 0d | 2010-06-29 | 2010-06-29 | 5FS+25d | 113d | 0d |  |
| 14 | 1.2.1.5 | Loader Details Drawings | milestone | 0d | 2010-06-29 | 2010-06-29 | 5FS+25d | 113d | 0d |  |
| 15 | 1.2.2 | **Shop Drawings** |  | 57d? | 2010-06-01 | 2010-08-05 |  | 113d |  |  |
| 16 | 1.2.2.1 | **Civil & Arch. Submital** |  | 45d | 2010-06-07 | 2010-07-28 |  | 113d |  |  |
| 17 | 1.2.2.1.1 | Civil Drawings Submital |  | 30d | 2010-06-07 | 2010-07-11 | 5FS+5d, 10, 13FF+10d, 14FF+10d | 113d | 0d |  |
| 18 | 1.2.2.1.2 | Arch. Drawings Submital |  | 30d | 2010-06-24 | 2010-07-28 | 17FF+15d, 11 | 113d | 0d |  |
| 19 | 1.2.2.2 | **Civil & Arch. Approval** |  | 15d | 2010-07-19 | 2010-08-05 |  | 113d |  |  |
| 20 | 1.2.2.2.1 | Civil Drawings Approval | milestone | 0d | 2010-07-19 | 2010-07-19 | 17FS+7d | 128d |  |  |
| 21 | 1.2.2.2.2 | Finishes Drawings Approval | milestone | 0d | 2010-08-05 | 2010-08-05 | 18FS+7d | 113d |  |  |
| 22 | 1.2.2.3 | **Steel Work Submitall** |  | 21d | 2010-06-07 | 2010-06-30 |  | 144d |  |  |
| 23 | 1.2.2.3.1 | Steel Drawings Submital |  | 21d | 2010-06-07 | 2010-06-30 | 5FS+5d, 10 | 144d | 0d |  |
| 24 | 1.2.2.4 | **Steel Work Approval** |  | 0d | 2010-06-30 | 2010-06-30 |  | 144d |  |  |
| 25 | 1.2.2.4.1 | Steel Drawings approval | milestone | 0d | 2010-06-30 | 2010-06-30 | 23 | 144d |  |  |

| ID | WBS | Task | Type | Duration | Start | Finish | Predecessors | Total slack | Free slack |
| --- | --- | --- | --- | --- | --- | --- | --- | --- | --- |
| 26 | 1.2.2.5 | **Plumbing Drawings Submital** |  | 1d? | 2010-06-01 | 2010-06-01 |  | 169d |  |
| 27 | 1.2.2.5.1 | Plumbing Drawings Submital |  | 1d? | 2010-06-01 | 2010-06-01 | 12 | 169d |  |
| 28 | 1.2.2.6 | **Plumbing Drawings Approval** |  | 1d? | 2010-06-01 | 2010-06-01 |  | 169d |  |
| 29 | 1.2.2.6.1 | Plumbing Drawings Approval |  | 1d? | 2010-06-01 | 2010-06-01 |  | 169d |  |
| 30 | 1.3 | **03- Construction Phase** |  | 168d | 2010-06-03 | 2010-12-30 |  | 0d |  |
| 31 | 1.3.1 | **03.1- Service Building - From Axis (1 to 4)** |  | 168d | 2010-06-03 | 2010-12-30 |  | 0d |  |
| 32 | 1.3.1.1 | **Civil Work** |  | 111d | 2010-06-03 | 2010-10-18 |  | 0d |  |
| 33 | 1.3.1.1.1 | Excavation up to foundation level ( -1.50 ) |  | 7d | 2010-06-03 | 2010-06-10 | 5FS+2d | 0d |  |
| 34 | 1.3.1.1.2 | PC Foundation |  | 8d | 2010-06-12 | 2010-06-20 | 33 | 0d |  |
| 35 | 1.3.1.1.3 | Backfilling up to level ( -1.10 ) |  | 4d | 2010-06-23 | 2010-06-27 | 34FS+2d | 0d |  |
| 36 | 1.3.1.1.4 | RC Footing & Semmells |  | 10d | 2010-06-28 | 2010-07-08 | 35 | 0d |  |
| 37 | 1.3.1.1.5 | Backfilling up to level ( -0.50 ) |  | 4d | 2010-07-10 | 2010-07-13 | 36 | 0d |  |
| 38 | 1.3.1.1.6 | RC Columns & Walls for Mezz. |  | 14d | 2010-07-14 | 2010-07-29 | 37 | 0d |  |
| 39 | 1.3.1.1.7 | Backfilling up to level (+1.30 ) |  | 12d | 2010-07-31 | 2010-08-12 | 38 | 0d |  |
| 40 | 1.3.1.1.8 | Electrical Work in Slab ( By Others ) | milestone | 0d | 2010-08-22 | 2010-08-22 | 39FF+8d | 0d |  |
| 41 | 1.3.1.1.9 | Mezz. Slab |  | 15d | 2010-08-14 | 2010-08-30 | 39, 40FF+7d | 0d |  |
| 42 | 1.3.1.1.10 | 1st Floor Columns |  | 7d | 2010-08-31 | 2010-09-07 | 41 | 0d |  |
| 43 | 1.3.1.1.11 | Electrical Work in Slab ( By Others ) | milestone | 0d | 2010-09-25 | 2010-09-25 | 42FF+8d | 0d |  |
| 44 | 1.3.1.1.12 | 1st Floor Slab |  | 15d | 2010-09-08 | 2010-10-03 | 42, 43FF+7d | 0d |  |
| 45 | 1.3.1.1.13 | PC S.O.G |  | 3d | 2010-09-29 | 2010-10-02 | 41FS+18d | 5d | 0d |
| 46 | 1.3.1.1.14 | Isolated Sheets |  | 6d | 2010-10-03 | 2010-10-09 | 45 | 5d | 0d |
| 47 | 1.3.1.1.15 | RC S.O.G |  | 8d | 2010-10-10 | 2010-10-18 | 46 | 5d | 0d |
| 48 | 1.3.1.2 | **Finshing Work** |  | 57d | 2010-10-19 | 2010-12-30 |  | 0d |  |
| 49 | 1.3.1.2.1 | **Masonary Work** |  | 19d | 2010-10-19 | 2010-11-09 | 47 | 0d |  |
| 50 | 1.3.1.2.1.1 | Masonary walls for Mezz. Floor |  | 8d | 2010-10-19 | 2010-10-27 | 47 | 7d | 0d |
| 51 | 1.3.1.2.1.2 | Masonary Walls for 1st Floor |  | 10d | 2010-10-25 | 2010-11-04 | 44FS+18d | 0d |  |
| 52 | 1.3.1.2.1.3 | Masonary Parapet for Roof |  | 4d | 2010-11-06 | 2010-11-09 | 51 | 0d |  |

| ID | WBS | Task | Type | Duration | Start | Finish | Predecessors | Total slack | Free slack |
| --- | --- | --- | --- | --- | --- | --- | --- | --- | --- |
| 53 | 1.3.1.2.2 | **External Finishes** |  | 33d | 2010-11-03 | 2010-12-18 |  | 11d |  |
| 54 | 1.3.1.2.2.1 | Scafolding Erection |  | 6d | 2010-11-03 | 2010-11-09 | 52FF, 51FF, 50FF | 11d | 0d |
| 55 | 1.3.1.2.2.2 | External Plaster |  | 15d | 2010-11-07 | 2010-11-30 | 54FF+12d | 11d | 0d |
| 56 | 1.3.1.2.2.3 | External Graviata Paint |  | 10d | 2010-11-29 | 2010-12-09 | 55FF+8d | 11d | 0d |
| 57 | 1.3.1.2.2.4 | Removing Scafolding |  | 3d | 2010-12-08 | 2010-12-11 | 56FF+1d | 17d |  |
| 58 | 1.3.1.2.2.5 | Steel Stair Erection |  | 7d | 2010-12-11 | 2010-12-18 | 56 | 11d |  |
| 59 | 1.3.1.2.3 | **Internal Finishes** |  | 49d | 2010-10-27 | 2010-12-30 |  | 0d |  |
| 60 | 1.3.1.2.3.1 | **Mezz. Floor** |  | 27d | 2010-10-27 | 2010-12-05 |  | 7d |  |
| 61 | 1.3.1.2.3.1.1 | Electrical Work in Slab ( By Others ) | milestone | 0d | 2010-10-27 | 2010-10-27 | 50FF | 7d | 0d |
| 62 | 1.3.1.2.3.1.2 | Plaster for Mezz. Floor |  | 8d | 2010-10-28 | 2010-11-06 | 50, 61 | 7d | 0d |
| 63 | 1.3.1.2.3.1.3 | Primary Painting for Mezz. Floor |  | 6d | 2010-11-10 | 2010-11-23 | 62FS+3d | 7d | 0d |
| 64 | 1.3.1.2.3.1.4 | Cearmic & Granite Flooring for Mezz. Floor |  | 6d | 2010-11-24 | 2010-11-30 | 63 | 7d | 0d |
| 65 | 1.3.1.2.3.1.5 | False Ceiling Work for Mezz. Floor |  | 4d | 2010-12-01 | 2010-12-05 | 64 | 10d |  |
| 66 | 1.3.1.2.3.2 | **1st Floor** |  | 28d | 2010-11-04 | 2010-12-14 |  | 0d |  |
| 67 | 1.3.1.2.3.2.1 | Electrical Work in Slab ( By Others ) | milestone | 0d | 2010-11-04 | 2010-11-04 | 51FF | 0d |  |
| 68 | 1.3.1.2.3.2.2 | Plaster for 1st Floor |  | 8d | 2010-11-06 | 2010-11-14 | 51, 67 | 0d |  |
| 69 | 1.3.1.2.3.2.3 | Primary Painting for 1st Floor |  | 6d | 2010-11-27 | 2010-12-02 | 68FS+4d | 0d |  |
| 70 | 1.3.1.2.3.2.4 | Ployster Membrane for toiltes |  | 5d | 2010-11-08 | 2010-11-13 | 51FS+2d | 0d |  |
| 71 | 1.3.1.2.3.2.5 | Cearmic Flooring & Walls for 1st Floor |  | 10d | 2010-11-28 | 2010-12-08 | 69FF+5d, 70, 88FS-1d | 0d |  |
| 72 | 1.3.1.2.3.2.6 | False Ceiling Work for 1st Floor |  | 5d | 2010-12-09 | 2010-12-14 | 71 | 2d |  |
| 73 | 1.3.1.2.3.3 | **Roof Floor** |  | 36d | 2010-11-10 | 2010-12-28 |  | 0d |  |
| 74 | 1.3.1.2.3.3.1 | Plaster for Roof Parapet |  | 4d | 2010-11-10 | 2010-11-14 | 52 | 0d |  |
| 75 | 1.3.1.2.3.3.2 | Ployester membrane |  | 7d | 2010-11-22 | 2010-11-29 | 74 | 0d |  |
| 76 | 1.3.1.2.3.3.3 | Thermal isolation |  | 6d | 2010-11-30 | 2010-12-06 | 75 | 0d |  |
| 77 | 1.3.1.2.3.3.4 | Roof Tiles |  | 8d | 2010-12-16 | 2010-12-25 | 76, 89 | 0d |  |
| 78 | 1.3.1.2.3.3.5 | Primary Painting for Roof Floor |  | 3d | 2010-12-26 | 2010-12-28 | 77 | 0d |  |

| ID | WBS | Task | Duration | Start | Finish | Predecessors | Total slack | Free slack |
| --- | --- | --- | --- | --- | --- | --- | --- | --- |
| 79 | 1.3.1.2.3.4 | **Stair Finishes** | 24d | 2010-11-11 | 2010-12-15 |  | 5d |  |
| 80 | 1.3.1.2.3.4.1 | Plaster Work | 10d | 2010-11-11 | 2010-11-29 | 50FS+5d, 51FS+5d | 5d | 0d |
| 81 | 1.3.1.2.3.4.2 | Granite Flooring | 8d | 2010-11-30 | 2010-12-08 | 80 | 5d | 0d |
| 82 | 1.3.1.2.3.4.3 | Primary Painting | 6d | 2010-12-09 | 2010-12-15 | 81 | 5d |  |
| 83 | 1.3.1.2.3.5 | **General Finshes** | 19d | 2010-12-09 | 2010-12-30 |  | 0d |  |
| 84 | 1.3.1.2.3.5.1 | Windows & Door install | 7d | 2010-12-09 | 2010-12-16 | 63, 64, 69, 71 | 0d |  |
| 85 | 1.3.1.2.3.5.2 | Final Painting | 12d | 2010-12-18 | 2010-12-30 | 84, 78FF+2d, 82FF+8d, 65, 72 | 0d |  |
| 86 | 1.3.1.2.3.5.3 | Carpet Flooring | 2d | 2010-12-29 | 2010-12-30 | 85FF | 0d |  |
| 87 | 1.3.1.3 | **Plumbing Work** | 35d | 2010-11-14 | 2010-12-30 |  | 0d |  |
| 88 | 1.3.1.3.1 | Draing & Water supply Pipes for Toiltes | 7d | 2010-11-14 | 2010-11-28 | 70 | 0d |  |
| 89 | 1.3.1.3.2 | Drainge Pipes for Roof | 8d | 2010-12-07 | 2010-12-15 | 76 | 0d |  |
| 90 | 1.3.1.3.3 | Fixture | 2d | 2010-12-29 | 2010-12-30 | 85FF | 0d |  |
| 91 | 1.3.2 | **03.2 - Warehouse - From Axis ( 4 to 15 )** | 161d | 2010-06-12 | 2010-12-30 |  | 0d |  |
| 92 | 1.3.2.1 | **Civil Work** | 156d | 2010-06-12 | 2010-12-25 |  | 0d |  |
| 93 | 1.3.2.1.1 | Excavation up to Level ( -1.50 ) | 6d | 2010-06-12 | 2010-06-17 | 33 | 0d |  |
| 94 | 1.3.2.1.2 | PC Footings | 7d | 2010-06-19 | 2010-06-26 | 93 | 0d |  |
| 95 | 1.3.2.1.3 | RC Footings | 12d | 2010-06-20 | 2010-07-03 | 94FF+6d | 0d |  |
| 96 | 1.3.2.1.4 | Cold Apply Bitoumin | 5d | 2010-07-01 | 2010-07-06 | 95FF+3d | 0d |  |
| 97 | 1.3.2.1.5 | Backfilling up to Level ( - 0.30 ) | 8d | 2010-07-04 | 2010-07-12 | 96FF+5d | 0d |  |
| 98 | 1.3.2.1.6 | RC Columns & Walls | 30d | 2010-07-13 | 2010-08-16 | 97 | 0d |  |
| 99 | 1.3.2.1.7 | Cold Apply Bitoumin | 5d | 2010-08-15 | 2010-08-19 | 98FF+3d | 0d |  |
| 100 | 1.3.2.1.8 | Backfilling arround Walls up to Zero Level | 4d | 2010-08-21 | 2010-08-24 | 99 | 0d |  |
| 101 | 1.3.2.1.9 | Internal Backfilling up to Level ( 1.30 ) | 14d | 2010-08-25 | 2010-09-18 | 100 | 0d |  |
| 102 | 1.3.2.1.10 | PC S.O.G | 10d | 2010-11-22 | 2010-12-02 | 107, 114FF+7d | 0d |  |
| 103 | 1.3.2.1.11 | Isolated Panels | 15d | 2010-11-24 | 2010-12-11 | 102FF+7d | 0d |  |
| 104 | 1.3.2.1.12 | RC S.O.G | 18d | 2010-12-05 | 2010-12-25 | 103FF+12d | 0d |  |

| ID | WBS | Task | Duration | Start | Finish | Predecessors | Total slack |
| --- | --- | --- | --- | --- | --- | --- | --- |
| 105 | 1.3.2.2 | **Steel Work** | 101d | 2010-08-01 | 2010-12-11 |  | 0d |
| 106 | 1.3.2.2.1 | Anchore Bolts Erection | 7d | 2010-08-01 | 2010-08-08 | 98FF-7d | 28d |
| 107 | 1.3.2.2.2 | Steel Framing Erection | 30d | 2010-09-19 | 2010-10-23 | 101, 106 | 0d |
| 108 | 1.3.2.2.3 | Roof Cladding | 14d | 2010-10-24 | 2010-11-08 | 107 | 7d |
| 109 | 1.3.2.2.4 | Side Cladding | 15d | 2010-11-24 | 2010-12-11 | 112FF+7d, 108 | 0d |
| 110 | 1.3.2.3 | **Finishes Work** | 53d | 2010-10-24 | 2010-12-30 |  | 0d |
| 111 | 1.3.2.3.1 | Masonary Walls | 15d | 2010-10-24 | 2010-11-09 | 107 | 0d |
| 112 | 1.3.2.3.2 | External Palster | 15d | 2010-11-09 | 2010-12-02 | 111FF+7d, 114FF+7d | 0d |
| 113 | 1.3.2.3.3 | External Graviata Paint | 15d | 2010-12-02 | 2010-12-19 | 109FF+7d | 0d |
| 114 | 1.3.2.3.4 | Internal Plaster | 15d | 2010-11-01 | 2010-11-24 | 111FF+7d | 0d |
| 115 | 1.3.2.3.5 | Internal Primary Paint | 10d | 2010-12-01 | 2010-12-12 | 114FS+5d | 11d |
| 116 | 1.3.2.3.6 | Final Internal Paint | 5d | 2010-12-26 | 2010-12-30 | 104, 115 | 0d |
| 117 | 1.3.2.3.7 | Door install | 2d | 2010-12-28 | 2010-12-29 | 116FF-1d | 1d |
| 118 | 1.3.3 | **03.3- Fence & External Rooms** | 122d | 2010-07-10 | 2010-12-13 |  | 15d |
| 119 | 1.3.3.1 | **Front Fance - Drivers & Security Rooms** | 92d | 2010-08-14 | 2010-12-13 |  | 0d |
| 120 | 1.3.3.1.1 | **Civil Work** | 40d | 2010-08-14 | 2010-10-06 |  | 0d |
| 121 | 1.3.3.1.1.1 | Excavation Work | 4d | 2010-08-14 | 2010-08-17 | 39 | 0d |
| 122 | 1.3.3.1.1.2 | PC Footings | 5d | 2010-08-18 | 2010-08-23 | 121 | 0d |
| 123 | 1.3.3.1.1.3 | Backfilling up to PC Level | 2d | 2010-08-24 | 2010-08-25 | 122 | 0d |
| 124 | 1.3.3.1.1.4 | RC Footings | 8d | 2010-08-26 | 2010-09-04 | 123 | 0d |
| 125 | 1.3.3.1.1.5 | RC Columns | 6d | 2010-09-02 | 2010-09-08 | 124FF+4d | 0d |
| 126 | 1.3.3.1.1.6 | Under Ground Masonary | 4d | 2010-09-18 | 2010-09-21 | 125 | 0d |
| 127 | 1.3.3.1.1.7 | Cold Apply Bitoumin | 2d | 2010-09-22 | 2010-09-23 | 126 | 0d |
| 128 | 1.3.3.1.1.8 | Backfilling up to Zero Level | 3d | 2010-09-25 | 2010-09-27 | 127 | 0d |
| 129 | 1.3.3.1.1.9 | Roof Slab | 8d | 2010-09-28 | 2010-10-06 | 128 | 0d |

| ID | WBS | Task | Duration | Start | Finish | Predecessors | Total slack | Free slack |
| --- | --- | --- | --- | --- | --- | --- | --- | --- |
| 130 | 1.3.3.1.2 | **Finishes Work** | 36d | 2010-10-26 | 2010-12-13 |  | 0d |  |
| 131 | 1.3.3.1.2.1 | Masonary Walls | 6d | 2010-10-26 | 2010-11-01 | 129FS+16d | 0d |  |
| 132 | 1.3.3.1.2.2 | Polyster Membrane | 3d | 2010-11-08 | 2010-11-10 | 131FS+5d | 15d | 0d |
| 133 | 1.3.3.1.2.3 | Plaster Work | 8d | 2010-10-27 | 2010-11-04 | 131FF+3d | 0d |  |
| 134 | 1.3.3.1.2.4 | Primary Paint | 3d | 2010-11-11 | 2010-11-14 | 133FS+3d, 132 | 17d | 2d |
| 135 | 1.3.3.1.2.5 | Cearmic flooring & Walls | 10d | 2010-11-24 | 2010-12-05 | 134, 140 | 15d | 0d |
| 136 | 1.3.3.1.2.6 | External Graviat Pints | 12d | 2010-11-08 | 2010-11-28 | 133FS+2d | 0d |  |
| 137 | 1.3.3.1.2.7 | Doors & Windows Install | 3d | 2010-12-06 | 2010-12-08 | 135 | 15d | 0d |
| 138 | 1.3.3.1.2.8 | Final Paints | 4d | 2010-12-09 | 2010-12-13 | 137 | 15d | 0d |
| 139 | 1.3.3.1.3 | **Plumbing Work** | 22d | 2010-11-11 | 2010-12-13 |  | 15d |  |
| 140 | 1.3.3.1.3.1 | Draine & Water Supply Pipes | 5d | 2010-11-11 | 2010-11-23 | 132 | 15d | 0d |
| 141 | 1.3.3.1.3.2 | Fixture | 2d | 2010-12-12 | 2010-12-13 | 132, 138FF | 15d |  |
| 142 | 1.3.3.2 | **Back Fance - Receiving Station** | 80d | 2010-07-10 | 2010-10-18 |  | 57d |  |
| 143 | 1.3.3.2.1 | **Civil Work** | 40d | 2010-07-10 | 2010-08-24 |  | 57d |  |
| 144 | 1.3.3.2.1.1 | Excavation Work | 4d | 2010-07-10 | 2010-07-13 | 36 | 57d | 0d |
| 145 | 1.3.3.2.1.2 | PC Footings | 5d | 2010-07-14 | 2010-07-19 | 144 | 57d | 0d |
| 146 | 1.3.3.2.1.3 | Backfilling up to PC Level | 2d | 2010-07-20 | 2010-07-21 | 145 | 57d | 0d |
| 147 | 1.3.3.2.1.4 | RC Footings | 8d | 2010-07-22 | 2010-07-31 | 146 | 57d | 0d |
| 148 | 1.3.3.2.1.5 | RC Columns | 6d | 2010-07-29 | 2010-08-04 | 147FF+4d | 57d | 0d |
| 149 | 1.3.3.2.1.6 | Under Ground Masonary | 4d | 2010-08-05 | 2010-08-09 | 148 | 57d | 0d |
| 150 | 1.3.3.2.1.7 | Cold Apply Bitoumin | 2d | 2010-08-10 | 2010-08-11 | 149 | 57d | 0d |
| 151 | 1.3.3.2.1.8 | Backfilling up to Zero Level | 3d | 2010-08-12 | 2010-08-15 | 150 | 57d | 0d |
| 152 | 1.3.3.2.1.9 | Roof Slab | 8d | 2010-08-16 | 2010-08-24 | 151 | 57d | 0d |
| 153 | 1.3.3.2.2 | **Finishes Work** | 28d | 2010-09-08 | 2010-10-18 |  | 57d |  |
| 154 | 1.3.3.2.2.1 | Masonary Walls | 6d | 2010-09-08 | 2010-09-22 | 152FS+12d | 57d | 0d |
| 155 | 1.3.3.2.2.2 | Polyster Membrane | 3d | 2010-09-23 | 2010-09-26 | 154 | 60d | 3d |
| 156 | 1.3.3.2.2.3 | Plaster Work | 8d | 2010-09-18 | 2010-09-26 | 154FF+3d | 57d | 0d |
| 157 | 1.3.3.2.2.4 | Primary Paint | 3d | 2010-09-30 | 2010-10-03 | 155, 156FS+3d | 57d | 0d |
| 158 | 1.3.3.2.2.5 | Cearmic flooring | 6d | 2010-10-04 | 2010-10-10 | 157 | 57d | 0d |
| 159 | 1.3.3.2.2.6 | External Graviat Pints | 12d | 2010-09-29 | 2010-10-12 | 156FS+2d | 62d |  |
| 160 | 1.3.3.2.2.7 | Doors & Windows Install | 3d | 2010-10-11 | 2010-10-13 | 158 | 57d | 0d |
| 161 | 1.3.3.2.2.8 | Final Paints | 4d | 2010-10-14 | 2010-10-18 | 160 | 57d |  |

| ID | WBS | Task | Duration | Start | Finish | Predecessors | Total slack | Free slack |
| --- | --- | --- | --- | --- | --- | --- | --- | --- |
| 162 | 1.3.4 | **03.4 - Landscape** | 65d | 2010-10-10 | 2010-12-30 |  | 0d |  |
| 163 | 1.3.4.1 | **Arround Warehouse** | 38d | 2010-11-10 | 2010-12-30 |  | 0d |  |
| 164 | 1.3.4.1.1 | Leveling | 5d | 2010-11-10 | 2010-11-22 | 111, 174 | 7d | 0d |
| 165 | 1.3.4.1.2 | Curbe install | 14d | 2010-11-23 | 2010-12-08 | 164 | 7d |  |
| 166 | 1.3.4.1.3 | PC S.O.G For Walkway | 5d | 2010-12-18 | 2010-12-22 | 165, 113FF+3d | 0d |  |
| 167 | 1.3.4.1.4 | RC S.O.G Walkway | 10d | 2010-12-20 | 2010-12-30 | 166FF+7d | 0d |  |
| 168 | 1.3.4.2 | **Intrance Zone** | 34d | 2010-11-22 | 2010-12-30 |  | 0d |  |
| 169 | 1.3.4.2.1 | Leveling | 6d | 2010-11-22 | 2010-11-28 | 136FF, 174 | 0d |  |
| 170 | 1.3.4.2.2 | Curbe install | 5d | 2010-11-25 | 2010-11-30 | 169FF+2d | 0d |  |
| 171 | 1.3.4.2.3 | PC S.O.G | 10d | 2010-11-29 | 2010-12-09 | 170FF+8d | 0d |  |
| 172 | 1.3.4.2.4 | RC S.O.G | 21d | 2010-12-07 | 2010-12-30 | 171FF+18d | 0d |  |
| 173 | 1.3.4.3 | **Plumbing Work** | 30d | 2010-10-10 | 2010-11-13 |  | 16d |  |
| 174 | 1.3.4.3.1 | Manholes | 15d | 2010-10-10 | 2010-10-26 | 128FS+10d | 16d | 0d |
| 175 | 1.3.4.3.2 | Pipes Line | 21d | 2010-10-20 | 2010-11-13 | 174FF+15d | 35d |  |
