# Chipsy obour

Schedule from MS Project, 2012-11-01 to 2013-10-01.
Grizli777

## Calendars

- chipsy obour: Mon-Sun 08:00-12:00, 13:00-17:00.

## Schedule

| ID | WBS | Task | Type | Duration | Start | Finish | Predecessors | Total slack | Free slack |
| --- | --- | --- | --- | --- | --- | --- | --- | --- | --- |
| 1 | 1 | **MILESTONES** |  | 335d | 2012-11-01 | 2013-10-01 |  | 0d |  |
| 2 | 1.1 | Letter of acceptance | milestone | 0d | 2012-11-01 | 2012-11-01 |  | 0d |  |
| 3 | 1.2 | Site handing over | milestone | 0d | 2012-11-01 | 2012-11-01 | 2 | 0d |  |
| 4 | 1.3 | Contract agreement | milestone | 0d | 2012-11-01 | 2012-11-01 | 3 | 0d |  |
| 5 | 1.4 | Advanced payment | milestone | 0d | 2012-11-01 | 2012-11-01 | 4 | 0d |  |
| 6 | 1.5 | Project Commencement Date | milestone | 0d | 2012-11-01 | 2012-11-01 | 5 | 0d |  |
| 7 | 1.6 | Temporary Plant shut down |  | 14d | 2013-07-01 | 2013-07-14 | 147SS | 79d |  |
| 8 | 1.7 | Project Handing Over | milestone | 0d | 2013-10-01 | 2013-10-01 | 6, 134, 126, 121, 100, 145, 77, 38, 78, 66 | 0d |  |
| 9 | 2 | **MOBILIZATION** |  | 335d | 2012-11-01 | 2013-10-01 |  | 0d |  |
| 10 | 2.1 | Mobilization |  | 15d | 2012-11-01 | 2012-11-15 | 6 | 0d |  |
| 11 | 2.2 | Demobilization |  | 7d | 2013-09-25 | 2013-10-01 | 8FF | 0d |  |
| 12 | 3 | **ENGINEERING** |  | 45d | 2012-11-05 | 2012-12-20 |  | 15d |  |
| 13 | 3.1 | **Submitalls** |  | 40d | 2012-11-05 | 2012-12-15 |  | 15d |  |
| 14 | 3.1.1 | Piles work | milestone | 0d | 2012-11-05 | 2012-11-05 | 10SS+5d | 15d | 0d |
| 15 | 3.1.2 | Concrete works | milestone | 0d | 2012-11-15 | 2012-11-15 | 10 | 315d | 0d |
| 16 | 3.1.3 | Doors & windows | milestone | 0d | 2012-11-29 | 2012-11-29 | 25FS+14d | 211d | 0d |
| 17 | 3.1.4 | Steel structure | milestone | 0d | 2012-12-15 | 2012-12-15 | 26FS+10d | 1d | 0d |
| 18 | 3.2 | **Approvalls** |  | 40d | 2012-11-10 | 2012-12-20 |  | 15d |  |
| 19 | 3.2.1 | Piles work | milestone | 0d | 2012-11-10 | 2012-11-10 | 14FS+5d | 15d |  |
| 20 | 3.2.2 | Concrete works | milestone | 0d | 2012-11-20 | 2012-11-20 | 15FS+5d | 315d |  |
| 21 | 3.2.3 | Doors & windows | milestone | 0d | 2012-12-04 | 2012-12-04 | 16FS+5d | 211d | 0d |
| 22 | 3.2.4 | Steel structure | milestone | 0d | 2012-12-20 | 2012-12-20 | 17FS+5d | 1d | 0d |
| 23 | 4 | **PROCUREMENT** |  | 110d | 2012-11-15 | 2013-03-05 |  | 21d |  |
| 24 | 4.1 | **Purchase orders** |  | 20d | 2012-11-15 | 2012-12-05 |  | 21d |  |
| 25 | 4.1.1 | Doors & windows | milestone | 0d | 2012-11-15 | 2012-11-15 | 10 | 211d | 0d |
| 26 | 4.1.2 | Steel structure | milestone | 0d | 2012-12-05 | 2012-12-05 | 10FS+20d | 1d | 0d |

| ID | WBS | Task | Type | Duration | Start | Finish | Predecessors | Total slack | Free slack |
| --- | --- | --- | --- | --- | --- | --- | --- | --- | --- |
| 27 | 4.2 | **Delivery dates** |  | 1d | 2013-03-04 | 2013-03-05 |  | 2d |  |
| 28 | 4.2.1 | Doors & windows | milestone | 0d | 2013-03-04 | 2013-03-04 | 21FS+90d | 211d |  |
| 29 | 4.2.2 | Steel structure | milestone | 0d | 2013-03-05 | 2013-03-05 | 22FS+75d | 1d | 0d |
| 30 | 5 | **CONSTRUCTION** |  | 335d | 2012-11-01 | 2013-10-01 |  | 0d |  |
| 31 | 5.1 | **Admin building finishes** |  | 180d | 2012-11-01 | 2013-04-29 |  | 155d |  |
| 32 | 5.1.1 | Masonry works |  | 45d | 2012-11-01 | 2012-12-15 |  | 155d | 0d |
| 33 | 5.1.2 | Plaster works |  | 45d | 2012-12-01 | 2013-01-14 | 32FS-15d | 155d | 0d |
| 34 | 5.1.3 | MEP works |  | 105d | 2012-12-16 | 2013-03-30 | 32 | 185d |  |
| 35 | 5.1.4 | Flooring works |  | 45d | 2012-12-31 | 2013-02-13 | 33FS-15d | 155d | 0d |
| 36 | 5.1.5 | False ceiling works |  | 45d | 2013-01-30 | 2013-03-15 | 35FS-15d | 155d | 0d |
| 37 | 5.1.6 | Doors & windows works |  | 45d | 2013-03-01 | 2013-04-14 | 36FS-15d | 155d | 0d |
| 38 | 5.1.7 | Painting works |  | 30d | 2013-03-31 | 2013-04-29 | 37FS-15d | 155d |  |
| 39 | 5.2 | **Final product warehouse** |  | 334d | 2012-11-02 | 2013-10-01 |  | 0d |  |
| 40 | 5.2.1 | Demolishing of asphalt & concrete slabs |  | 10d | 2012-11-02 | 2012-11-11 | 10SS+1d | 0d |  |
| 41 | 5.2.2 | Excavation to level 1.5 |  | 10d | 2012-11-12 | 2012-11-21 | 40 | 0d |  |
| 42 | 5.2.3 | Preparation for Piles equipment |  | 4d | 2012-11-22 | 2012-11-25 | 41 | 0d |  |
| 43 | 5.2.4 | Piling works |  | 45d | 2012-11-26 | 2013-01-09 | 41SS+5d, 42, 19 | 0d |  |
| 44 | 5.2.5 | Demolishing pile heads& casting ties |  | 15d | 2012-12-31 | 2013-01-14 | 43FS-10d | 0d |  |
| 45 | 5.2.6 | Excvation to level -2.5 |  | 7d | 2013-01-15 | 2013-01-21 | 44 | 0d |  |
| 46 | 5.2.7 | First anchors for piles |  | 10d | 2013-01-22 | 2013-01-31 | 45 | 0d |  |
| 47 | 5.2.8 | Suspend works for 14 days |  | 14d | 2013-02-01 | 2013-02-14 | 46 | 0d |  |
| 48 | 5.2.9 | Excavation to level (-8.5) |  | 15d | 2013-02-15 | 2013-03-01 | 47 | 0d |  |
| 49 | 5.2.10 | Compacting & immersion of soil |  | 3d | 2013-03-02 | 2013-03-04 | 48 | 0d |  |
| 50 | 5.2.11 | P.C footings |  | 7d | 2013-03-05 | 2013-03-11 | 49 | 0d |  |
| 51 | 5.2.12 | Backfilling between foundations |  | 3d | 2013-03-12 | 2013-03-14 | 50 | 0d |  |
| 52 | 5.2.13 | R.C footings |  | 20d | 2013-03-15 | 2013-04-03 | 51 | 0d |  |
| 53 | 5.2.14 | R.C for walls & columns For basement |  | 60d | 2013-03-25 | 2013-05-23 | 52SS+10d | 0d |  |
| 54 | 5.2.15 | Footing insulations &backfilling |  | 8d | 2013-04-04 | 2013-04-11 | 52 | 17d |  |
| 55 | 5.2.16 | P.C 15 cm for S.O.G |  | 30d | 2013-04-29 | 2013-05-28 | 54, 53FF+5d | 0d |  |
| 56 | 5.2.17 | R.C for basement slab |  | 45d | 2013-05-09 | 2013-06-22 | 55SS+10d | 0d |  |
| 57 | 5.2.18 | Steel structure erection |  | 21d | 2013-06-25 | 2013-07-15 | 56FS+2d, 29 | 0d |  |
| 58 | 5.2.19 | Removing form works |  | 7d | 2013-07-08 | 2013-07-14 | 56FS+15d | 64d | 0d |
| 59 | 5.2.20 | R.C for S.O.G |  | 15d | 2013-07-15 | 2013-07-29 | 58 | 64d |  |
| 60 | 5.2.21 | Corrugated sheets erection |  | 15d | 2013-07-16 | 2013-07-30 | 57 | 0d |  |
| 61 | 5.2.22 | Masonry & plaster works for Ground floor |  | 25d | 2013-07-31 | 2013-08-24 | 60 | 0d |  |
| 62 | 5.2.23 | MEP WORKS |  | 63d | 2013-07-31 | 2013-10-01 | 61SS | 0d |  |
| 63 | 5.2.24 | Sandwich Panel erection |  | 20d | 2013-08-25 | 2013-09-13 | 61 | 18d |  |
| 64 | 5.2.25 | Doors erection |  | 10d | 2013-08-25 | 2013-09-03 | 61 | 0d |  |
| 65 | 5.2.26 | Plaster&Painting works |  | 20d | 2013-09-04 | 2013-09-23 | 64 | 0d |  |
| 66 | 5.2.27 | Dock leveler installation |  | 15d | 2013-09-17 | 2013-10-01 | 65SS+13d | 0d |  |

| ID | WBS | Task | Duration | Start | Finish | Predecessors | Total slack | Free slack | Deadline |
| --- | --- | --- | --- | --- | --- | --- | --- | --- | --- |
| 67 | 5.3 | **Processing area** | 207d | 2012-11-06 | 2013-05-31 |  | 0d |  |  |
| 68 | 5.3.1 | Temporary wall works | 15d | 2012-11-06 | 2012-11-20 | 10SS+5d | 0d |  |  |
| 69 | 5.3.2 | Demolition works for masonry | 14d | 2012-11-21 | 2012-12-04 | 68 | 0d |  |  |
| 70 | 5.3.3 | Demolition works for S.O.G | 35d | 2012-12-05 | 2013-01-08 | 69 | 0d |  |  |
| 71 | 5.3.4 | Masonry works | 30d | 2013-01-09 | 2013-02-07 | 70 | 0d |  |  |
| 72 | 5.3.5 | Drainage system works | 30d | 2013-01-09 | 2013-02-07 | 70 | 16d | 0d |  |
| 73 | 5.3.6 | Plaster works | 20d | 2013-02-08 | 2013-02-27 | 71 | 0d |  |  |
| 74 | 5.3.7 | S.OG works | 35d | 2013-02-08 | 2013-03-14 | 72 | 16d | 0d |  |
| 75 | 5.3.8 | MEP works | 90d | 2013-02-28 | 2013-05-28 | 73 | 0d |  |  |
| 76 | 5.3.9 | Corrugated sheets erection | 30d | 2013-03-15 | 2013-04-13 | 74 | 16d | 0d |  |
| 77 | 5.3.10 | Painting works | 25d | 2013-04-21 | 2013-05-15 | 73, 76FS+7d | 16d |  | 2013-05-31 |
| 78 | 5.3.11 | U-crete works | 20d | 2013-05-12 | 2013-05-31 | 76, 75FS-17d | 0d |  | 2013-05-31 |
| 79 | 5.4 | **DC building** | 207d | 2012-11-06 | 2013-05-31 |  | 1d |  |  |
| 80 | 5.4.1 | Demolition works for masonry | 15d | 2012-11-06 | 2012-11-20 | 10SS+5d | 21d | 20d |  |
| 81 | 5.4.2 | Demolition works for S.O.G | 20d | 2012-11-06 | 2012-11-25 | 10SS+5d | 1d | 0d |  |
| 82 | 5.4.3 | Demolition works for platform | 15d | 2012-11-26 | 2012-12-10 | 81 | 1d | 0d |  |
| 83 | 5.4.4 | Excavation inside building | 10d | 2012-12-11 | 2012-12-20 | 82, 81, 80 | 1d | 0d |  |
| 84 | 5.4.5 | P.C footings | 20d | 2012-12-21 | 2013-01-09 | 83 | 1d | 0d |  |
| 85 | 5.4.6 | R.c footings | 25d | 2012-12-31 | 2013-01-24 | 84SS+10d | 1d | 0d |  |
| 86 | 5.4.7 | Anchors erection | 10d | 2013-01-20 | 2013-01-29 | 85FS-5d | 1d | 0d |  |
| 87 | 5.4.8 | R.C columns & pedestals | 15d | 2013-01-30 | 2013-02-13 | 85, 86 | 1d | 0d |  |
| 88 | 5.4.9 | Footing insulation | 10d | 2013-02-09 | 2013-02-18 | 87FS-5d | 1d | 0d |  |
| 89 | 5.4.10 | Back filling between foundations | 15d | 2013-02-19 | 2013-03-05 | 88 | 1d | 0d |  |
| 90 | 5.4.11 | Steel structure erection | 25d | 2013-03-06 | 2013-03-30 | 89, 29 | 1d | 0d |  |
| 91 | 5.4.12 | Slab on grade works | 25d | 2013-03-16 | 2013-04-09 | 90SS+10d | 150d | 0d |  |
| 92 | 5.4.13 | Masonry works | 25d | 2013-03-24 | 2013-04-17 | 90SS+18d | 1d | 0d |  |
| 93 | 5.4.14 | MEP works | 60d | 2013-04-02 | 2013-05-31 | 92SS+9d | 123d |  |  |
| 94 | 5.4.15 | Corrugated sheets for walls | 25d | 2013-04-08 | 2013-05-02 | 92SS+15d | 137d | 0d |  |
| 95 | 5.4.16 | Corrugated sheets for Roof erection | 25d | 2013-04-10 | 2013-05-04 | 91 | 150d |  |  |
| 96 | 5.4.17 | Plaster works | 19d | 2013-04-13 | 2013-05-01 | 92SS+20d | 1d | 0d |  |
| 97 | 5.4.18 | Painting works | 15d | 2013-05-02 | 2013-05-16 | 96 | 138d |  |  |
| 98 | 5.4.19 | Epoxy painting works | 20d | 2013-05-02 | 2013-05-21 | 96 | 1d | 0d |  |
| 99 | 5.4.20 | Sandwhich panel erection | 15d | 2013-05-03 | 2013-05-17 | 94 | 137d |  |  |
| 100 | 5.4.21 | Doors & metal works erection | 15d | 2013-05-12 | 2013-05-26 | 98FS-10d | 128d |  |  |
| 101 | 5.4.22 | U-crete works | 15d | 2013-05-16 | 2013-05-30 | 98SS+14d | 1d |  | 2013-05-31 |

| ID | WBS | Task | Duration | Start | Finish | Predecessors | Total slack | Free slack |
| --- | --- | --- | --- | --- | --- | --- | --- | --- |
| 102 | 5.5 | **Cold store building** | 221d | 2012-11-06 | 2013-06-14 |  | 109d |  |
| 103 | 5.5.1 | Demolition works for S.O.G | 20d | 2012-11-06 | 2012-11-25 | 10SS+5d | 125d | 0d |
| 104 | 5.5.2 | Excavation | 10d | 2012-11-26 | 2012-12-05 | 103 | 125d | 0d |
| 105 | 5.5.3 | P.C footings | 15d | 2012-12-06 | 2012-12-20 | 104 | 125d | 0d |
| 106 | 5.5.4 | R.c footings | 20d | 2012-12-21 | 2013-01-09 | 105 | 125d | 0d |
| 107 | 5.5.5 | Anchors erection | 7d | 2013-01-10 | 2013-01-16 | 106 | 125d | 0d |
| 108 | 5.5.6 | R.C columns & pedestals | 15d | 2013-01-17 | 2013-01-31 | 107 | 125d | 0d |
| 109 | 5.5.7 | Footing insulation | 7d | 2013-02-01 | 2013-02-07 | 108 | 125d | 0d |
| 110 | 5.5.8 | Back filling between foundations | 10d | 2013-02-08 | 2013-02-17 | 109 | 125d | 16d |
| 111 | 5.5.9 | Steel structure erection | 20d | 2013-03-06 | 2013-03-25 | 110, 29 | 109d | 0d |
| 112 | 5.5.10 | Slab on grade works | 20d | 2013-03-26 | 2013-04-14 | 111 | 109d | 0d |
| 113 | 5.5.11 | Masonry works | 20d | 2013-04-15 | 2013-05-04 | 112 | 109d | 0d |
| 114 | 5.5.12 | External works | 45d | 2013-04-25 | 2013-06-08 | 111FS+30d | 115d |  |
| 115 | 5.5.13 | Plaster works | 20d | 2013-05-05 | 2013-05-24 | 113 | 109d | 0d |
| 116 | 5.5.14 | Corrugated sheets works | 20d | 2013-05-05 | 2013-05-24 | 111, 113 | 130d |  |
| 117 | 5.5.15 | MEP works | 40d | 2013-05-05 | 2013-06-13 | 113 | 110d |  |
| 118 | 5.5.16 | Sandwhich panel erection | 10d | 2013-05-25 | 2013-06-03 | 115 | 120d |  |
| 119 | 5.5.17 | Painting works | 20d | 2013-05-25 | 2013-06-13 | 115 | 110d |  |
| 120 | 5.5.18 | Epoxy painting works | 20d | 2013-05-25 | 2013-06-13 | 115 | 110d |  |
| 121 | 5.5.19 | Doors & metal works erection | 15d | 2013-05-31 | 2013-06-14 | 115FS+6d | 109d |  |
| 122 | 5.6 | **Oil tank foundations** | 162d | 2012-11-16 | 2013-04-26 |  | 158d |  |
| 123 | 5.6.1 | Demolition works | 15d | 2012-11-16 | 2012-11-30 | 10 | 158d | 0d |
| 124 | 5.6.2 | Excavation works | 7d | 2012-12-01 | 2012-12-07 | 123 | 158d | 0d |
| 125 | 5.6.3 | Concrete works | 60d | 2012-12-08 | 2013-02-05 | 124 | 158d | 0d |
| 126 | 5.6.4 | Finishing works | 80d | 2013-02-06 | 2013-04-26 | 125 | 158d | 0d |
| 127 | 5.6.5 | MEP works | 40d | 2013-03-17 | 2013-04-25 | 126SS+39d | 159d |  |

| ID | WBS | Task | Duration | Start | Finish | Predecessors | Total slack | Free slack |
| --- | --- | --- | --- | --- | --- | --- | --- | --- |
| 128 | 5.7 | **Chiller building** | 175d | 2012-11-16 | 2013-05-09 |  | 145d |  |
| 129 | 5.7.1 | Demolition works | 15d | 2012-11-16 | 2012-11-30 | 10 | 145d | 0d |
| 130 | 5.7.2 | Temporary walls | 10d | 2012-12-01 | 2012-12-10 | 129 | 145d | 0d |
| 131 | 5.7.3 | R.C columns | 15d | 2012-12-11 | 2012-12-25 | 130 | 145d | 0d |
| 132 | 5.7.4 | R.C slab | 25d | 2012-12-26 | 2013-01-19 | 131 | 145d | 0d |
| 133 | 5.7.5 | Masonry works | 20d | 2013-01-20 | 2013-02-08 | 132 | 145d | 0d |
| 134 | 5.7.6 | Finishing works | 80d | 2013-02-09 | 2013-04-29 | 133 | 145d | 0d |
| 135 | 5.7.7 | MEP works | 80d | 2013-02-19 | 2013-05-09 | 134SS+10d | 145d |  |
| 136 | 5.8 | **Ground water tank** | 225d | 2012-12-16 | 2013-07-28 |  | 65d |  |
| 137 | 5.8.1 | Piles work | 30d | 2012-12-16 | 2013-01-14 | 10FS+30d, 14 | 65d | 0d |
| 138 | 5.8.2 | Excavation works to foundation level | 7d | 2013-01-15 | 2013-01-21 | 137 | 65d | 0d |
| 139 | 5.8.3 | P.C footings | 15d | 2013-01-22 | 2013-02-05 | 138 | 65d | 0d |
| 140 | 5.8.4 | Insulation works | 7d | 2013-02-06 | 2013-02-12 | 139 | 65d | 0d |
| 141 | 5.8.5 | R.C footings | 20d | 2013-02-13 | 2013-03-04 | 140 | 65d | 0d |
| 142 | 5.8.6 | R.C walls | 30d | 2013-03-05 | 2013-04-03 | 141 | 65d | 0d |
| 143 | 5.8.7 | R.C for roofs & stairs | 25d | 2013-04-04 | 2013-04-28 | 142 | 65d | 0d |
| 144 | 5.8.8 | Tests & insulation works | 23d | 2013-04-29 | 2013-05-21 | 143 | 65d | 0d |
| 145 | 5.8.9 | Finishing works | 20d | 2013-05-12 | 2013-05-31 | 144FS-10d | 65d | 0d |
| 146 | 5.8.10 | MEP works first Fix | 30d | 2013-06-01 | 2013-06-30 | 145 | 65d | 0d |
| 147 | 5.8.11 | Temporary plant shut down | 14d | 2013-07-01 | 2013-07-14 | 145, 146 | 65d | 0d |
| 148 | 5.8.12 | MEP works second Fix | 14d | 2013-07-15 | 2013-07-28 | 147 | 65d |  |
