# CSV to MPP gemini trial 2

Schedule from MS Project, 2026-04-21 to 2028-05-01.

## Calendars

- Standard: Mon-Fri 08:00-12:00, 13:00-17:00; Sat-Sun off.

## Schedule

| ID | Task | Type | Duration | Start | Finish | Predecessors | Total slack | Free slack | Constraint | Text1 |
| --- | --- | --- | --- | --- | --- | --- | --- | --- | --- | --- |
| 1 | Project Start | milestone | 0d | 2026-04-21 | 2026-04-21 |  | 0d |  | start no earlier than 2026-04-21 | TRUE |
| 2 | Design Start | milestone | 0d | 2026-04-21 | 2026-04-21 | 1 | 0d |  | start no earlier than 2026-04-21 | TRUE |
| 3 | Procurement Start | milestone | 0d | 2026-04-21 | 2026-04-21 | 1 | 194d | 40d | start no earlier than 2026-04-21 | FALSE |
| 4 | MEP (Mechanical, Electrical, Plumbing) Start | milestone | 0d | 2026-04-21 | 2026-04-21 | 1 | 205d | 99d | start no earlier than 2026-04-21 | FALSE |
| 5 | Concept Design Development & Site Analysis |  | 25d | 2026-04-21 | 2026-05-25 | 2 | 0d |  | start no earlier than 2026-04-21 | TRUE |
| 6 | Schematic Design & BIM Model Level 100 Setup |  | 30d | 2026-05-05 | 2026-06-15 | 5SS+10d | 0d |  | start no earlier than 2026-04-21 | TRUE |
| 7 | Concept & Schematic Phase Complete | milestone | 0d | 2026-06-15 | 2026-06-15 | 5, 6 | 0d |  | start no earlier than 2026-04-21 | TRUE |
| 8 | Specifications & Tender Documents Preparation |  | 15d | 2026-06-16 | 2026-07-06 | 3, 6 | 154d | 0d | start no earlier than 2026-04-21 | FALSE |
| 9 | Structural Design Development (Hybrid Frame & Spine Beams) |  | 45d | 2026-06-16 | 2026-08-17 | 7 | 0d |  | start no earlier than 2026-04-21 | TRUE |
| 10 | Vendor Pre-qualification & Bidding Process |  | 20d | 2026-07-07 | 2026-08-03 | 8 | 154d | 24d | start no earlier than 2026-04-21 | FALSE |
| 11 | MEP Design Development & BREEAM Strategy (Excellent) |  | 40d | 2026-07-13 | 2026-09-04 | 7, 9SS+19d | 0d |  | start no earlier than 2026-04-21 | TRUE |
| 12 | Building Permit Application (Rakennuslupa) Preparation |  | 20d | 2026-08-10 | 2026-09-04 | 9SS+20d, 11SS+20d | 0d |  | start no earlier than 2026-04-21 | TRUE |
| 13 | Building Permit Approved | milestone | 0d | 2026-09-04 | 2026-09-04 | 12 | 0d |  | start no earlier than 2026-04-21 | TRUE |
| 14 | Civil & Structural Start | milestone | 0d | 2026-09-04 | 2026-09-04 | 1, 13 | 48d | 0d | start no earlier than 2026-04-21 | FALSE |
| 15 | Design Development Phase Complete | milestone | 0d | 2026-09-04 | 2026-09-04 | 9, 11, 13 | 0d |  | start no earlier than 2026-04-21 | TRUE |
| 16 | Vendor Selection & Award (Main Packages) |  | 10d | 2026-09-07 | 2026-09-18 | 10, 13 | 130d | 0d | start no earlier than 2026-04-21 | FALSE |
| 17 | Utility Diversions (District Heating & Water Mains) |  | 15d | 2026-09-07 | 2026-09-25 | 14 | 48d | 0d | start no earlier than 2026-04-21 | FALSE |
| 18 | MEP Design Development & BREEAM Strategy |  | 45d | 2026-09-07 | 2026-11-06 | 4, 11 | 106d | 0d | start no earlier than 2026-04-21 | FALSE |
| 19 | IFC Architectural & Structural Drawings (Phase 1) |  | 50d | 2026-09-07 | 2026-11-13 | 15 | 0d |  | start no earlier than 2026-04-21 | TRUE |
| 20 | Main Contracts Awarded | milestone | 0d | 2026-09-18 | 2026-09-18 | 16 | 130d | 29d | start no earlier than 2026-04-21 | FALSE |
| 21 | Specialist Consultant Interface (Facade & Winter Protection) |  | 30d | 2026-09-21 | 2026-10-30 | 19SS+10d | 10d | 0d | start no earlier than 2026-04-21 | FALSE |
| 22 | Site Clearance & Bulk Excavation to Formation |  | 12d | 2026-09-28 | 2026-10-13 | 17 | 48d |  | start no earlier than 2026-04-21 | FALSE |
| 23 | MEP Long-Lead Equipment Technical Submittals (AHUs/Chillers) |  | 20d | 2026-10-02 | 2026-10-29 | 11, 19SS+19d | 6d | 0d | start no earlier than 2026-04-21 | FALSE |
| 24 | Precast Spine Beam & Column Shop Drawing Coordination |  | 25d | 2026-10-05 | 2026-11-06 | 19SS+20d | 0d |  | start no earlier than 2026-04-21 | TRUE |
| 25 | BIM Coordination & Clash Detection (Level 300) |  | 40d | 2026-10-19 | 2026-12-11 | 19SS+29d, 21SS+10d, 24SS+10d, 23SS+5d | 0d |  | start no earlier than 2026-04-21 | TRUE |
| 26 | MEP Long-Lead Equipment (AHUs/Chillers) Procurement |  | 7d | 2026-10-30 | 2026-11-09 | 20, 23 | 135d | 0d | start no earlier than 2026-04-21 | FALSE |
| 27 | Facade Carrier Frame & Panel Procurement |  | 15d | 2026-11-02 | 2026-11-20 | 20, 21 | 301d | 0d | start no earlier than 2026-04-21 | FALSE |
| 28 | Precast Spine Beams & Columns Order Placement |  | 5d | 2026-11-09 | 2026-11-13 | 20, 24 | 95d | 5d | start no earlier than 2026-04-21 | FALSE |
| 29 | Utility Diversions (District Heating/Water Main) |  | 30d | 2026-11-09 | 2026-12-18 | 18, 17 | 106d | 52d | start no earlier than 2026-04-21 | FALSE |
| 30 | Procurement of Long-Lead MEP Equipment (AHUs/Chillers) |  | 120d | 2026-11-10 | 2027-04-26 | 18, 26 | 135d | 0d | start no earlier than 2026-04-21 | FALSE |
| 31 | M: Long-Lead Orders Finalized | milestone | 0d | 2026-11-20 | 2026-11-20 | 28, 26, 27 | 326d | 0d | start no earlier than 2026-04-21 | FALSE |
| 32 | Procurement: Fit-out Materials & Architectural Finishes |  | 25d | 2026-12-07 | 2027-01-08 | 31SS+10d | 326d | 0d | start no earlier than 2026-04-21 | FALSE |
| 33 | Final IFC Release for Construction |  | 15d | 2026-12-14 | 2027-01-01 | 19, 21, 24, 23, 25 | 0d |  | start no earlier than 2026-04-21 | TRUE |
| 34 | Rock-socketed RR Piling Installation |  | 20d | 2026-12-21 | 2027-01-15 | 22, 33SS+5d | 0d |  | start no earlier than 2026-04-21 | TRUE |
| 35 | Design Complete | milestone | 0d | 2027-01-01 | 2027-01-01 | 33 | 346d |  | start no earlier than 2026-04-21 | FALSE |
| 36 | Procurement Close-out & Final Account Agreement |  | 15d | 2027-01-11 | 2027-01-29 | 32 | 326d | 0d | start no earlier than 2026-04-21 | FALSE |
| 37 | RC Pile Caps & Ground Beams |  | 14d | 2027-01-18 | 2027-02-04 | 34 | 0d |  | start no earlier than 2026-04-21 | TRUE |
| 38 | Procurement Complete | milestone | 0d | 2027-01-29 | 2027-01-29 | 36 | 326d |  | start no earlier than 2026-04-21 | FALSE |
| 39 | Basement RC Walls & Waterproofing |  | 18d | 2027-02-05 | 2027-03-02 | 37 | 0d |  | start no earlier than 2026-04-21 | TRUE |
| 40 | Ground Floor RC Slab Pour |  | 8d | 2027-03-03 | 2027-03-12 | 39 | 0d |  | start no earlier than 2026-04-21 | TRUE |
| 41 | Basement Plant Room First Fix (Piping & Containment) |  | 25d | 2027-03-03 | 2027-04-06 | 29, 39 | 54d | 14d | start no earlier than 2026-04-21 | FALSE |
| 42 | Foundations & Substructure Complete | milestone | 0d | 2027-03-12 | 2027-03-12 | 40 | 0d |  | start no earlier than 2026-04-21 | TRUE |
| 43 | Architectural & Interior Finishes Start | milestone | 0d | 2027-03-12 | 2027-03-12 | 1, 40 | 60d | 0d | start no earlier than 2026-04-21 | FALSE |
| 44 | Substructure Complete | milestone | 0d | 2027-03-12 | 2027-03-12 | 42 | 296d |  | start no earlier than 2026-04-21 | FALSE |
| 45 | Lobby & Reception: Internal Masonry and Partition Walls |  | 15d | 2027-03-15 | 2027-04-02 | 43, 40 | 114d | 89d | start no earlier than 2026-04-21 | FALSE |
| 46 | RC Jump-form Core Construction (L1-Roof) |  | 65d | 2027-03-15 | 2027-06-11 | 42 | 0d |  | start no earlier than 2026-04-21 | TRUE |
| 47 | Erection of Precast Columns & Spine Beams (L1-L3) |  | 15d | 2027-03-29 | 2027-04-16 | 46SS+10d, 28 | 0d |  | start no earlier than 2026-04-21 | TRUE |
| 48 | Level 4 Composite Steel Transfer Beam Installation |  | 10d | 2027-04-19 | 2027-04-30 | 47 | 0d |  | start no earlier than 2026-04-21 | TRUE |
| 49 | Installation of AHUs, Chillers & District Heating Heat Exchangers |  | 20d | 2027-04-27 | 2027-05-24 | 30, 41 | 135d | 123d | start no earlier than 2026-04-21 | FALSE |
| 50 | Precast Column & Spine Beam Erection (L5-L13) |  | 45d | 2027-05-03 | 2027-07-02 | 48 | 0d |  | start no earlier than 2026-04-21 | TRUE |
| 51 | Hollow-core Slab Installation & In-situ Topping (Typical) |  | 52d | 2027-05-10 | 2027-07-20 | 47SS+5d, 50SS+5d | 0d |  | start no earlier than 2026-04-21 | TRUE |
| 52 | MEP First Fix - Levels 1-6 (Ductwork & Risers) |  | 60d | 2027-05-24 | 2027-08-13 | 41, 51SS+10d | 21d | 0d | start no earlier than 2026-04-21 | FALSE |
| 53 | Levels 1-6: Internal Drywall Partitions (First Fix) |  | 45d | 2027-06-04 | 2027-08-05 | 43, 51SS+19d | 1d | 0d | start no earlier than 2026-04-21 | FALSE |
| 54 | Facade Access Ready | milestone | 0d | 2027-06-04 | 2027-06-04 | 51SS+20d | 161d | 0d | start no earlier than 2026-04-21 | FALSE |
| 55 | Facade Carrier Frame Installation (South Elevation) |  | 25d | 2027-06-07 | 2027-07-09 | 54, 27 | 161d | 0d | start no earlier than 2026-04-21 | FALSE |
| 56 | Electrical Containment & Cable Pulling (Power & ICT) |  | 90d | 2027-06-18 | 2027-10-21 | 52SS+10d, 53SS+10d | 12d | 0d | start no earlier than 2026-04-21 | FALSE |
| 57 | Facade Insulation & Membrane Application |  | 20d | 2027-06-21 | 2027-07-16 | 55SS+10d | 161d | 0d | start no earlier than 2026-04-21 | FALSE |
| 58 | MEP First Fix - Levels 7-13 (Ductwork & Risers) |  | 60d | 2027-06-21 | 2027-09-10 | 52SS+20d, 51SS+30d | 41d | 29d | start no earlier than 2026-04-21 | FALSE |
| 59 | Fire Protection Sprinkler Installation |  | 75d | 2027-07-01 | 2027-10-13 | 52SS+19d, 53SS+19d | 18d | 6d | start no earlier than 2026-04-21 | FALSE |
| 60 | Levels 7-13: Internal Drywall Partitions (First Fix) |  | 50d | 2027-07-02 | 2027-09-09 | 53SS+19d, 51SS+39d | 0d |  | start no earlier than 2026-04-21 | TRUE |
| 61 | Envelope Watertight | milestone | 0d | 2027-07-16 | 2027-07-16 | 57 | 206d |  | start no earlier than 2026-04-21 | FALSE |
| 62 | Roof Structural Slab & Parapets |  | 12d | 2027-07-21 | 2027-08-05 | 46, 50, 51 | 192d | 0d | start no earlier than 2026-04-21 | FALSE |
| 63 | Wet Area Waterproofing & Flood Testing (All Levels) |  | 20d | 2027-08-06 | 2027-09-02 | 45, 53 | 75d | 70d | start no earlier than 2026-04-21 | FALSE |
| 64 | Superstructure Frame Topped Out | milestone | 0d | 2027-08-05 | 2027-08-05 | 62 | 192d | 0d | start no earlier than 2026-04-21 | FALSE |
| 65 | Civil & Structural Complete | milestone | 0d | 2027-08-05 | 2027-08-05 | 64, 57 | 192d |  | start no earlier than 2026-04-21 | FALSE |
| 66 | Superstructure Complete | milestone | 0d | 2027-08-05 | 2027-08-05 | 64 | 192d |  | start no earlier than 2026-04-21 | FALSE |
| 67 | Internal Plastering & Skimming (Lobby & Offices) |  | 40d | 2027-09-10 | 2027-11-04 | 45, 53, 60, 59SS+20d | 0d |  | start no earlier than 2026-04-21 | TRUE |
| 68 | Suspended Ceiling Grid & Acoustic Tile Installation |  | 55d | 2027-09-24 | 2027-12-09 | 67SS+10d, 56SS+20d | 0d |  | start no earlier than 2026-04-21 | TRUE |
| 69 | MEP First Fix Complete | milestone | 0d | 2027-10-21 | 2027-10-21 | 58, 56, 59 | 12d | 0d | start no earlier than 2026-04-21 | FALSE |
| 70 | MEP Rough-In Complete | milestone | 0d | 2027-10-21 | 2027-10-21 | 69 | 137d |  | start no earlier than 2026-04-21 | FALSE |

| ID | Task | Type | Duration | Start | Finish | Predecessors | Total slack | Free slack | Constraint | Text1 |
| --- | --- | --- | --- | --- | --- | --- | --- | --- | --- | --- |
| 71 | MEP Second Fix (Grilles, Sanitaryware, Lighting) |  | 80d | 2027-10-22 | 2028-02-10 | 69, 49SS+5d, 68SS+10d | 12d | 0d | start no earlier than 2026-04-21 | FALSE |
| 72 | Internal Door Frames & Ironmongery Installation |  | 25d | 2027-11-05 | 2027-12-09 | 67 | 35d |  | start no earlier than 2026-04-21 | FALSE |
| 73 | BMS & Controls System Integration |  | 40d | 2027-12-03 | 2028-01-27 | 71SS+30d | 22d | 10d | start no earlier than 2026-04-21 | FALSE |
| 74 | Drywall & Ceiling Close-out Complete | milestone | 0d | 2027-12-09 | 2027-12-09 | 60, 68 | 0d |  | start no earlier than 2026-04-21 | TRUE |
| 75 | Floor Tiling & Stone Finishes (Lobby & Wet Areas) |  | 30d | 2027-12-10 | 2028-01-20 | 63, 74 | 5d | 0d | start no earlier than 2026-04-21 | FALSE |
| 76 | Raised Access Flooring Installation (Office Levels) |  | 35d | 2027-12-10 | 2028-01-27 | 74 | 0d |  | start no earlier than 2026-04-21 | TRUE |
| 77 | Bespoke Joinery & Reception Desk Fit-out |  | 15d | 2028-01-21 | 2028-02-10 | 75 | 30d |  | start no earlier than 2026-04-21 | FALSE |
| 78 | Sanitaryware Installation & Final Connections |  | 20d | 2028-01-21 | 2028-02-17 | 75, 58SS+10d | 25d |  | start no earlier than 2026-04-21 | FALSE |
| 79 | Wet Works and Flooring Complete | milestone | 0d | 2028-01-27 | 2028-01-27 | 76, 75 | 0d |  | start no earlier than 2026-04-21 | TRUE |
| 80 | Internal Painting & Wall Finishes (Final Coat) |  | 40d | 2028-01-28 | 2028-03-23 | 72, 79 | 0d |  | start no earlier than 2026-04-21 | TRUE |
| 81 | MEP Installation Complete | milestone | 0d | 2028-02-10 | 2028-02-10 | 71, 73 | 12d | 0d | start no earlier than 2026-04-21 | FALSE |
| 82 | MEP Systems Testing & Balancing |  | 30d | 2028-02-11 | 2028-03-23 | 81, 57 | 12d | 0d | start no earlier than 2026-04-21 | FALSE |
| 83 | Testing & Commissioning Complete | milestone | 0d | 2028-03-23 | 2028-03-23 | 82 | 27d |  | start no earlier than 2026-04-21 | FALSE |
| 84 | Final Builders Clean & Sparkle Clean |  | 12d | 2028-03-24 | 2028-04-10 | 77, 80, 78 | 0d |  | start no earlier than 2026-04-21 | TRUE |
| 85 | Architectural & Interior Finishes Complete | milestone | 0d | 2028-04-10 | 2028-04-10 | 84 | 0d |  | start no earlier than 2026-04-21 | TRUE |
| 86 | Interior Fit-Out Complete | milestone | 0d | 2028-04-10 | 2028-04-10 | 85 | 15d |  | start no earlier than 2026-04-21 | FALSE |
| 87 | Final Commissioning & Occupancy Inspection (KÃ¤yttÃ¶Ã¶nottotarkastus) |  | 15d | 2028-04-11 | 2028-05-01 | 82, 85 | 0d |  | start no earlier than 2026-04-21 | TRUE |
| 88 | MEP (Mechanical, Electrical, Plumbing) Complete | milestone | 0d | 2028-05-01 | 2028-05-01 | 87 | 0d |  | start no earlier than 2026-04-21 | TRUE |
| 89 | Project Completion | milestone | 0d | 2028-05-01 | 2028-05-01 | 35, 38, 65, 85, 88, 91 | 0d |  | start no earlier than 2026-04-21 | TRUE |
| 90 | Authority Inspection | milestone | 0d | 2028-05-01 | 2028-05-01 | 87 | 0d |  | start no earlier than 2026-04-21 | TRUE |
| 91 | Practical Completion | milestone | 0d | 2028-05-01 | 2028-05-01 | 90 | 0d |  | start no earlier than 2026-04-21 | TRUE |
