# Chloride Master-1

Schedule from MS Project, 2010-05-08 to 2010-12-30.

## Calendars

- Chloride: Mon-Thu 08:00-12:00, 13:00-17:00; Fri off; Sat-Sun 08:00-12:00, 13:00-17:00. Exceptions (off unless hours are given): 2010-09-10 to 2010-09-17 (Eid 1), 2010-11-15 to 2010-11-20 (Eid 2).

## Schedule

| ID | WBS | Task | Type | Duration | Start | Finish | Predecessors | Total slack | Free slack | Constraint | Deadline |
| --- | --- | --- | --- | --- | --- | --- | --- | --- | --- | --- | --- |
| 1 | 1 | **Chloride Project** |  | 192d? | 2010-05-08 | 2010-12-30 |  | 0d |  |  |  |
| 2 | 1.1 | **1 - Project General** |  | 173d | 2010-05-31 | 2010-12-30 |  | 0d |  |  |  |
| 3 | 1.1.1 | Leveling & Sub-based Part 1 | milestone | 0d | 2010-05-31 | 2010-05-31 |  | 8d | 0d |  |  |
| 4 | 1.1.2 | Mobilization |  | 15d | 2010-05-31 | 2010-06-16 | 3 | 158d |  |  |  |
| 5 | 1.1.3 | End of project | milestone | 0d | 2010-12-30 | 2010-12-30 | 196FF, 182FF, 187FF, 183FF, 200, 189, 130, 54, 58, 60, 62, 71, 75, 72, 84, 82, 93, 95, 97, 145, 146, 147, 143, 148, 160, 161, 171, 173, 174, 175, 73, 193, 194, 195, 81, 150, 178, 110, 122, 190, 163, 120 | 0d |  |  | 2010-12-31 |
| 6 | 1.2 | **2- Engineering phase** |  | 28d | 2010-06-15 | 2010-07-18 |  | 60d |  |  |  |
| 7 | 1.2.1 | **Material Submitals** |  | 28d | 2010-06-15 | 2010-07-18 |  | 85d |  |  |  |
| 8 | 1.2.1.1 | **Service Equipments Cataloges & Data Sheets** |  | 0d | 2010-06-15 | 2010-06-15 |  | 132d |  |  |  |
| 9 | 1.2.1.1.1 | Receiving service Equipments information from Owner | milestone | 0d | 2010-06-15 | 2010-06-15 | 3FS+14d | 120d | 0d |  |  |
| 10 | 1.2.1.2 | **Civil Material** |  | 27d | 2010-06-17 | 2010-07-18 |  | 84d |  |  |  |
| 11 | 1.2.1.2.1 | **Submittals** |  | 20d | 2010-06-17 | 2010-07-10 |  | 84d |  |  |  |
| 12 | 1.2.1.2.1.1 | Civil Submitalls |  | 20d | 2010-06-17 | 2010-07-10 | 3FS+15d | 72d | 0d | start no earlier than 2010-06-16 |  |
| 13 | 1.2.1.2.2 | **Approval** |  | 20d | 2010-06-26 | 2010-07-18 |  | 84d |  |  |  |
| 14 | 1.2.1.2.2.1 | Civil Submitall approval |  | 20d | 2010-06-26 | 2010-07-18 | 12FF+7d | 84d | 0d |  |  |
| 15 | 1.2.1.3 | **Mechanical Material** |  | 27d | 2010-06-16 | 2010-07-17 |  | 132d |  |  |  |
| 16 | 1.2.1.3.1 | **Submittals** |  | 20d | 2010-06-16 | 2010-07-08 |  | 132d |  |  |  |
| 17 | 1.2.1.3.1.1 | Mechanical Submitalls |  | 20d | 2010-06-16 | 2010-07-08 | 3FS+14d | 120d | 0d | start no earlier than 2010-06-15 |  |
| 18 | 1.2.1.3.2 | **Approval** |  | 20d | 2010-06-24 | 2010-07-17 |  | 132d |  |  |  |
| 19 | 1.2.1.3.2.1 | Mechanical Submitall approval |  | 20d | 2010-06-24 | 2010-07-17 | 17FF+7d | 132d |  |  |  |
| 20 | 1.2.1.4 | **Electrical Material** |  | 27d | 2010-06-16 | 2010-07-17 |  | 132d |  |  |  |
| 21 | 1.2.1.4.1 | **Submittals** |  | 20d | 2010-06-16 | 2010-07-08 |  | 132d |  |  |  |
| 22 | 1.2.1.4.1.1 | Electrical Submitalls |  | 20d | 2010-06-16 | 2010-07-08 | 3FS+14d | 120d | 0d |  |  |
| 23 | 1.2.1.4.2 | **Approval** |  | 20d | 2010-06-24 | 2010-07-17 |  | 132d |  |  |  |
| 24 | 1.2.1.4.2.1 | Electrical Submitall approval |  | 20d | 2010-06-24 | 2010-07-17 | 22FF+7d | 132d |  |  |  |

| ID | WBS | Task | Type | Duration | Start | Finish | Predecessors | Total slack | Free slack | Constraint | Deadline |
| --- | --- | --- | --- | --- | --- | --- | --- | --- | --- | --- | --- |
| 25 | 1.2.2 | **Shop drawings submittals** |  | 27d | 2010-06-16 | 2010-07-17 |  | 60d |  |  |  |
| 26 | 1.2.2.1 | **Civil Drawings** |  | 27d | 2010-06-16 | 2010-07-17 |  | 60d |  |  |  |
| 27 | 1.2.2.1.1 | **Submittals** |  | 20d | 2010-06-16 | 2010-07-08 |  | 60d |  |  |  |
| 28 | 1.2.2.1.1.1 | Civil Drawings Approval |  | 20d | 2010-06-16 | 2010-07-08 | 3FS+14d | 30d | 0d |  |  |
| 29 | 1.2.2.1.2 | **Approval** |  | 20d | 2010-06-24 | 2010-07-17 |  | 60d |  |  |  |
| 30 | 1.2.2.1.2.1 | Civil Drawings Approval |  | 20d | 2010-06-24 | 2010-07-17 | 28FF+7d | 60d | 49d |  |  |
| 31 | 1.2.2.2 | **Mechanical Drawings** |  | 27d | 2010-06-16 | 2010-07-17 |  | 132d |  |  |  |
| 32 | 1.2.2.2.1 | **Submittals** |  | 20d | 2010-06-16 | 2010-07-08 |  | 132d |  |  |  |
| 33 | 1.2.2.2.1.1 | Mechanical Drawings Preperation |  | 20d | 2010-06-16 | 2010-07-08 | 3FS+14d, 9 | 120d | 0d |  |  |
| 34 | 1.2.2.2.2 | **Approval** |  | 20d | 2010-06-24 | 2010-07-17 |  | 132d |  |  |  |
| 35 | 1.2.2.2.2.1 | Mechanical Drawings Approval |  | 20d | 2010-06-24 | 2010-07-17 | 33FF+7d | 132d |  |  |  |
| 36 | 1.2.2.3 | **Electrical Drawings** |  | 27d | 2010-06-16 | 2010-07-17 |  | 132d |  |  |  |
| 37 | 1.2.2.3.1 | **Submittals** |  | 20d | 2010-06-16 | 2010-07-08 |  | 132d |  |  |  |
| 38 | 1.2.2.3.1.1 | Electrical Drawings Preperation |  | 20d | 2010-06-16 | 2010-07-08 | 3, 9 | 120d | 0d |  |  |
| 39 | 1.2.2.3.2 | **Approval** |  | 20d | 2010-06-24 | 2010-07-17 |  | 132d |  |  |  |
| 40 | 1.2.2.3.2.1 | Electrical Drawings Approval |  | 20d | 2010-06-24 | 2010-07-17 | 38FF+7d | 132d |  |  |  |
| 41 | 1.3 | **Steel Wok ( by Zamal )** |  | 71d | 2010-05-08 | 2010-07-30 |  | 0d |  |  |  |
| 42 | 1.3.1 | Zone ( ZF : Y ) | milestone | 0d | 2010-05-08 | 2010-05-08 |  | 0d |  | must finish on 2010-05-08 | 2010-05-08 |
| 43 | 1.3.2 | Zone ( Y : T ) | milestone | 0d | 2010-05-12 | 2010-05-12 |  | 0d |  | must finish on 2010-05-12 | 2010-05-12 |
| 44 | 1.3.3 | Zone ( T : I ) | milestone | 0d | 2010-06-30 | 2010-06-30 |  | 0d |  | must finish on 2010-06-30 | 2010-06-30 |
| 45 | 1.3.4 | Zone ( I : A ) | milestone | 0d | 2010-07-30 | 2010-07-30 |  | 0d |  | must finish on 2010-07-30 | 2010-07-30 |
| 46 | 1.4 | **Service Equipments Delivery ( By Owner )** |  | 118d | 2010-05-31 | 2010-10-21 |  | 55d |  |  |  |
| 47 | 1.4.1 | Delivery of Equipment for Service Room Part 1 | milestone | 0d | 2010-05-31 | 2010-05-31 |  | 173d |  |  |  |
| 48 | 1.4.2 | Delivery of Equipment for Service Room Part 2 | milestone | 0d | 2010-10-21 | 2010-10-21 | 158 | 55d |  |  |  |
| 49 | 1.4.3 | Delivery of Equipment for Service Room Part 3 | milestone | 0d | 2010-05-31 | 2010-05-31 |  | 173d |  |  |  |

| ID | WBS | Task | Duration | Start | Finish | Predecessors | Total slack | Free slack |
| --- | --- | --- | --- | --- | --- | --- | --- | --- |
| 50 | 1.5 | **3- Construction Phase** | 159d? | 2010-06-16 | 2010-12-30 |  | 0d |  |
| 51 | 1.5.1 | **3.1 - Production Area 1** | 67d | 2010-06-26 | 2010-09-18 |  | 84d |  |
| 52 | 1.5.1.1 | **Civil Work** | 40d | 2010-06-26 | 2010-08-10 |  | 84d |  |
| 53 | 1.5.1.1.1 | PC S.O.G | 25d | 2010-06-26 | 2010-07-24 | 3, 14SS | 84d | 0d |
| 54 | 1.5.1.1.2 | RC S.O.G & drain grills | 28d | 2010-07-10 | 2010-08-10 | 53FS-13d | 111d |  |
| 55 | 1.5.1.2 | **Finishing** | 59d | 2010-06-26 | 2010-09-01 |  | 84d |  |
| 56 | 1.5.1.2.1 | Masonary work | 34d | 2010-06-26 | 2010-08-03 | 53SS | 84d | 0d |
| 57 | 1.5.1.2.2 | Plaster work | 20d | 2010-07-27 | 2010-08-18 | 56FS-7d | 92d | 0d |
| 58 | 1.5.1.2.3 | Painting Work 1st fix | 12d | 2010-08-19 | 2010-09-01 | 57 | 92d |  |
| 59 | 1.5.1.3 | **Mechanical Works** | 33d | 2010-08-04 | 2010-09-18 |  | 84d |  |
| 60 | 1.5.1.3.1 | Installation Of Mechanical Works | 33d | 2010-08-04 | 2010-09-18 | 56 | 84d |  |
| 61 | 1.5.1.4 | **Electrical Works** | 33d | 2010-08-04 | 2010-09-18 |  | 84d |  |
| 62 | 1.5.1.4.1 | Installation Of Electrical Works | 33d | 2010-08-04 | 2010-09-18 | 56 | 84d |  |
| 63 | 1.5.2 | **3.2 - Production Area 2** | 89d | 2010-07-01 | 2010-10-19 |  | 57d |  |
| 64 | 1.5.2.1 | **Civil Works** | 62d | 2010-07-01 | 2010-09-18 |  | 57d |  |
| 65 | 1.5.2.1.1 | Leveling & Sub-based | 10d | 2010-07-01 | 2010-07-12 | 44 | 57d | 0d |
| 66 | 1.5.2.1.2 | PC S.O.G | 29d | 2010-07-10 | 2010-08-11 | 65FS-3d | 84d | 0d |
| 67 | 1.5.2.1.3 | RC S.O.G & Drain grills | 37d | 2010-07-31 | 2010-09-18 | 66FS-11d | 84d |  |
| 68 | 1.5.2.2 | **Finishing** | 76d | 2010-07-13 | 2010-10-16 |  | 58d |  |
| 69 | 1.5.2.2.1 | Masonary work | 31d | 2010-07-13 | 2010-08-17 | 65 | 58d | 0d |
| 70 | 1.5.2.2.2 | Plaster work | 28d | 2010-08-14 | 2010-09-21 | 69FS-4d | 60d | 0d |
| 71 | 1.5.2.2.3 | Painting Work 1st fix | 30d | 2010-09-05 | 2010-10-16 | 70FS-9d | 60d |  |
| 72 | 1.5.2.3 | **Mechanical Work** | 47d | 2010-08-18 | 2010-10-18 | 69 | 58d |  |
| 73 | 1.5.2.3.1 | Installation Of Mechanical Work | 47d | 2010-08-18 | 2010-10-18 | 69 | 58d |  |

| ID | WBS | Task | Duration | Start | Finish | Predecessors | Total slack | Free slack |
| --- | --- | --- | --- | --- | --- | --- | --- | --- |
| 74 | 1.5.2.4 | **Electrical Works** | 47d | 2010-08-18 | 2010-10-18 |  | 58d |  |
| 75 | 1.5.2.4.1 | Installation Of Electrical Work | 47d | 2010-08-18 | 2010-10-18 | 69 | 58d |  |
| 76 | 1.5.2.5 | **Mezzanine** | 63d | 2010-08-01 | 2010-10-19 |  | 57d |  |
| 77 | 1.5.2.5.1 | **Civil Works** | 30d | 2010-08-01 | 2010-09-04 |  | 57d |  |
| 78 | 1.5.2.5.1.1 | Mezzanine R.C Slab | 20d | 2010-08-01 | 2010-08-23 | 65FS+16d | 57d | 0d |
| 79 | 1.5.2.5.1.2 | Masonary Works | 10d | 2010-08-24 | 2010-09-04 | 78 | 57d | 0d |
| 80 | 1.5.2.5.2 | **Electromechanical Works** | 21d | 2010-09-05 | 2010-10-05 | 79 | 69d |  |
| 81 | 1.5.2.5.2.1 | Plumbing | 15d | 2010-09-05 | 2010-09-28 |  | 75d |  |
| 82 | 1.5.2.5.2.2 | Electrical Works | 21d | 2010-09-05 | 2010-10-05 | 79FS-5d | 69d |  |
| 83 | 1.5.2.5.3 | **Finishing** | 26d | 2010-09-20 | 2010-10-19 |  | 57d |  |
| 84 | 1.5.2.5.3.1 | Finishes | 26d | 2010-09-20 | 2010-10-19 | 79FS+7d | 57d |  |
| 85 | 1.5.3 | **3.3 - Production Area 3** | 86d | 2010-07-31 | 2010-11-14 |  | 0d |  |
| 86 | 1.5.3.1 | **Civil Work** | 63d | 2010-07-31 | 2010-10-18 |  | 0d |  |
| 87 | 1.5.3.1.1 | leveling & Sub-based | 19d | 2010-07-31 | 2010-08-21 | 45 | 0d |  |
| 88 | 1.5.3.1.2 | PC S.O.G | 20d | 2010-08-22 | 2010-09-20 | 87 | 0d |  |
| 89 | 1.5.3.1.3 | RC S.O.G & Drain grills | 35d | 2010-09-01 | 2010-10-18 | 88FS-11d | 58d |  |
| 90 | 1.5.3.2 | **Finishing** | 47d | 2010-09-21 | 2010-11-14 |  | 0d |  |
| 91 | 1.5.3.2.1 | Masonary work | 28d | 2010-09-21 | 2010-10-23 | 88 | 0d |  |
| 92 | 1.5.3.2.2 | Plaster work | 15d | 2010-10-18 | 2010-11-03 | 91FS-5d | 0d |  |
| 93 | 1.5.3.2.3 | Painting Work 1st fix | 9d | 2010-11-04 | 2010-11-14 | 92 | 0d |  |
| 94 | 1.5.3.3 | **Mechanical Works** | 19d | 2010-10-24 | 2010-11-14 |  | 35d |  |
| 95 | 1.5.3.3.1 | Installation Of Mechanical Work | 19d | 2010-10-24 | 2010-11-14 | 91 | 35d |  |
| 96 | 1.5.3.4 | **Electrical Works** | 19d | 2010-10-24 | 2010-11-14 |  | 35d |  |
| 97 | 1.5.3.4.1 | Installation Of Electrical Work | 19d | 2010-10-24 | 2010-11-14 | 91 | 35d |  |

| ID | WBS | Task | Type | Duration | Start | Finish | Predecessors | Total slack | Free slack | Constraint |
| --- | --- | --- | --- | --- | --- | --- | --- | --- | --- | --- |
| 98 | 1.5.4 | **Storages** |  | 135d | 2010-06-16 | 2010-12-02 |  | 24d |  |  |
| 99 | 1.5.4.1 | **3.4 - Row Material Storge 1 & Plate Storge** |  | 126d | 2010-06-16 | 2010-11-22 |  | 33d |  |  |
| 100 | 1.5.4.1.1 | **Civil Works** |  | 86d | 2010-06-16 | 2010-09-30 |  | 33d |  |  |
| 101 | 1.5.4.1.1.1 | Start work | milestone | 0d | 2010-06-16 | 2010-06-16 |  | 33d | 0d | start no earlier than 2010-06-16 |
| 102 | 1.5.4.1.1.2 | PC S.O.G |  | 5d | 2010-08-26 | 2010-08-31 | 105 | 33d | 0d |  |
| 103 | 1.5.4.1.1.3 | RC S.O.G |  | 10d | 2010-09-01 | 2010-09-19 | 102FF+10d | 73d | 0d |  |
| 104 | 1.5.4.1.1.4 | Masonary work |  | 36d | 2010-06-16 | 2010-07-27 | 101 | 33d | 0d |  |
| 105 | 1.5.4.1.1.5 | Plaster work |  | 10d | 2010-08-15 | 2010-08-25 | 104FS+15d | 33d | 0d |  |
| 106 | 1.5.4.1.1.6 | Painting Work 1st fix |  | 10d | 2010-09-20 | 2010-09-30 | 103 | 73d |  |  |
| 107 | 1.5.4.1.2 | **Mechanical Works** |  | 35d | 2010-10-07 | 2010-11-22 |  | 33d |  |  |
| 108 | 1.5.4.1.2.1 | Installation Of Mechanical Works |  | 35d | 2010-10-07 | 2010-11-22 | 102FS+25d | 33d |  |  |
| 109 | 1.5.4.1.3 | **Electrical Works** |  | 55d | 2010-09-07 | 2010-11-22 |  | 33d |  |  |
| 110 | 1.5.4.1.3.1 | Installation Of Electrical Works |  | 55d | 2010-09-07 | 2010-11-22 | 102FS+5d | 33d |  |  |
| 111 | 1.5.4.2 | **3.5 - Row Material Storge 2** |  | 94d | 2010-08-01 | 2010-11-30 |  | 26d |  |  |
| 112 | 1.5.4.2.1 | **Civil Works** |  | 67d | 2010-08-01 | 2010-10-24 |  | 26d |  |  |
| 113 | 1.5.4.2.1.1 | Leveling & Sub-based |  | 5d | 2010-08-01 | 2010-08-05 | 44FS+26d | 26d | 0d |  |
| 114 | 1.5.4.2.1.2 | PC S.O.G |  | 10d | 2010-09-02 | 2010-09-20 | 117 | 26d | 0d |  |
| 115 | 1.5.4.2.1.3 | RC S.O.G |  | 12d | 2010-10-03 | 2010-10-16 | 114FS+10d | 53d | 0d |  |
| 116 | 1.5.4.2.1.4 | Masonary work |  | 13d | 2010-08-07 | 2010-08-21 | 113 | 26d | 0d |  |
| 117 | 1.5.4.2.1.5 | Plaster work |  | 10d | 2010-08-22 | 2010-09-01 | 116FF+10d | 26d | 0d |  |
| 118 | 1.5.4.2.1.6 | Painting Work 1st fix |  | 7d | 2010-10-17 | 2010-10-24 | 115 | 53d |  |  |
| 119 | 1.5.4.2.2 | **Mechanical Works** |  | 10d | 2010-11-14 | 2010-11-30 |  | 26d |  |  |
| 120 | 1.5.4.2.2.1 | Installation Of Mechanical Works |  | 10d | 2010-11-14 | 2010-11-30 | 114FS+46d | 26d |  |  |
| 121 | 1.5.4.2.3 | **Electrical Works** |  | 31d | 2010-10-20 | 2010-11-30 |  | 26d |  |  |
| 122 | 1.5.4.2.3.1 | Installation Of Electrical Works |  | 31d | 2010-10-20 | 2010-11-30 | 114FS+25d | 26d |  |  |

| ID | WBS | Task | Type | Duration | Start | Finish | Predecessors | Total slack | Free slack | Constraint |
| --- | --- | --- | --- | --- | --- | --- | --- | --- | --- | --- |
| 123 | 1.5.4.3 | **3.6 - Finish Product Storge** |  | 62d | 2010-09-09 | 2010-12-02 |  | 24d |  |  |
| 124 | 1.5.4.3.1 | **Civil Works** |  | 60d | 2010-09-09 | 2010-11-30 |  | 24d |  |  |
| 125 | 1.5.4.3.1.1 | Leveling & Sub-based layer |  | 8d | 2010-09-18 | 2010-09-26 | 45FS+36d | 24d | 0d |  |
| 126 | 1.5.4.3.1.2 | PC S.O.G |  | 8d | 2010-10-19 | 2010-10-27 | 129FF+3d | 24d | 0d |  |
| 127 | 1.5.4.3.1.3 | RC S.O.G |  | 14d | 2010-10-31 | 2010-11-21 | 126FS+2d | 26d | 0d |  |
| 128 | 1.5.4.3.1.4 | Masonary work |  | 25d | 2010-09-09 | 2010-10-14 | 125FS-9d | 24d | 0d |  |
| 129 | 1.5.4.3.1.5 | Plaster work |  | 15d | 2010-10-07 | 2010-10-24 | 128FS-7d | 24d | 0d |  |
| 130 | 1.5.4.3.1.6 | Painting Work 1st fix |  | 8d | 2010-11-22 | 2010-11-30 | 127 | 26d |  |  |
| 131 | 1.5.4.3.2 | **Mechanical Works** |  | 15d | 2010-11-10 | 2010-12-02 |  | 24d |  |  |
| 132 | 1.5.4.3.2.1 | Installation Of Mechanical Works |  | 15d | 2010-11-10 | 2010-12-02 | 126FS+11d | 24d |  |  |
| 133 | 1.5.4.3.3 | **Electrical Works** |  | 20d | 2010-11-04 | 2010-12-02 |  | 24d |  |  |
| 134 | 1.5.4.3.3.1 | Installation Of Electrical Works |  | 20d | 2010-11-04 | 2010-12-02 | 126SS+14d | 24d |  |  |
| 135 | 1.5.5 | **3.7 - Service Rooms** |  | 148d | 2010-06-16 | 2010-12-18 |  | 11d |  |  |
| 136 | 1.5.5.1 | **Service Room Area 1** |  | 148d | 2010-06-16 | 2010-12-18 |  | 11d |  |  |
| 137 | 1.5.5.1.1 | **Civil Works** |  | 96d | 2010-06-16 | 2010-10-12 |  | 11d |  |  |
| 138 | 1.5.5.1.1.1 | Start of work | milestone | 0d | 2010-06-16 | 2010-06-16 |  | 11d | 0d | start no earlier than 2010-06-16 |
| 139 | 1.5.5.1.1.2 | PC S.O.G |  | 10d | 2010-08-09 | 2010-08-19 | 138FS+46d | 11d | 0d |  |
| 140 | 1.5.5.1.1.3 | RC S.O.G |  | 14d | 2010-08-21 | 2010-09-05 | 139, 30SS | 11d | 0d |  |
| 141 | 1.5.5.1.1.4 | Masonary work |  | 15d | 2010-08-26 | 2010-09-19 | 140FS-9d | 11d | 0d |  |
| 142 | 1.5.5.1.1.5 | Plaster work |  | 10d | 2010-09-20 | 2010-09-30 | 141FF+10d | 63d | 0d |  |
| 143 | 1.5.5.1.1.6 | Painting Work 1st fix |  | 10d | 2010-10-02 | 2010-10-12 | 142 | 63d |  |  |
| 144 | 1.5.5.1.2 | **Electromechanical Works** |  | 105d | 2010-08-05 | 2010-12-18 |  | 11d |  |  |
| 145 | 1.5.5.1.2.1 | Mechanical Work |  | 32d | 2010-08-05 | 2010-09-18 | 141FS-33d | 84d |  |  |
| 146 | 1.5.5.1.2.2 | Electrical Work |  | 32d | 2010-08-05 | 2010-09-18 | 141FS-33d | 11d | 0d |  |
| 147 | 1.5.5.1.2.3 | Plumbing Work |  | 32d | 2010-08-05 | 2010-09-18 | 141FS-33d | 84d |  |  |
| 148 | 1.5.5.1.2.4 | Electrical Work for Electrical Room |  | 20d | 2010-11-25 | 2010-12-18 | 146FS+53d | 11d |  |  |

| ID | WBS | Task | Duration | Start | Finish | Predecessors | Total slack | Free slack | Constraint |
| --- | --- | --- | --- | --- | --- | --- | --- | --- | --- |
| 149 | 1.5.5.1.3 | **Finishing** | 32d | 2010-08-05 | 2010-09-18 |  | 84d |  |  |
| 150 | 1.5.5.1.3.1 | Finishes Work | 32d | 2010-08-05 | 2010-09-18 | 141FS-33d | 84d |  |  |
| 151 | 1.5.5.2 | **Service Room Area 2** | 67d | 2010-07-29 | 2010-10-21 |  | 55d |  |  |
| 152 | 1.5.5.2.1 | **Civil Works** | 67d | 2010-07-29 | 2010-10-21 |  | 55d |  |  |
| 153 | 1.5.5.2.1.1 | Leveling & Sub-based | 6d | 2010-07-29 | 2010-08-04 | 44FS+24d | 55d | 0d |  |
| 154 | 1.5.5.2.1.2 | PC S.O.G | 6d | 2010-09-07 | 2010-09-20 | 153FS+28d | 55d | 0d |  |
| 155 | 1.5.5.2.1.3 | RC S.O.G | 10d | 2010-09-21 | 2010-10-02 | 154 | 55d | 0d |  |
| 156 | 1.5.5.2.1.4 | Masonary work | 10d | 2010-09-09 | 2010-09-27 | 155FS-14d | 55d | 0d |  |
| 157 | 1.5.5.2.1.5 | Plaster work | 15d | 2010-09-23 | 2010-10-10 | 156FS-4d | 55d | 0d |  |
| 158 | 1.5.5.2.1.6 | Painting Work 1st fix | 10d | 2010-10-11 | 2010-10-21 | 157 | 55d | 0d |  |
| 159 | 1.5.5.2.2 | **Electromechanical Works** | 23d | 2010-09-22 | 2010-10-18 |  | 58d |  |  |
| 160 | 1.5.5.2.2.1 | Mechanical Work | 23d | 2010-09-22 | 2010-10-18 | 156FS-5d | 58d |  |  |
| 161 | 1.5.5.2.2.2 | Electrical Work | 23d | 2010-09-22 | 2010-10-18 | 156FS-5d | 58d |  |  |
| 162 | 1.5.5.2.3 | **Finishing** | 22d | 2010-09-23 | 2010-10-18 |  | 58d |  |  |
| 163 | 1.5.5.2.3.1 | Finish Works | 22d | 2010-09-23 | 2010-10-18 | 156FS-4d | 58d |  |  |
| 164 | 1.5.5.3 | **Service Room Area 3** | 84d | 2010-08-30 | 2010-12-18 |  | 11d |  |  |
| 165 | 1.5.5.3.1 | **Civil Works** | 61d | 2010-08-30 | 2010-11-21 |  | 11d |  |  |
| 166 | 1.5.5.3.1.1 | Leveling & Sub-based | 8d | 2010-08-30 | 2010-09-07 | 45 | 11d | 0d | start no earlier than 2010-08-30 |
| 167 | 1.5.5.3.1.2 | PC S.O.G | 10d | 2010-09-19 | 2010-09-29 | 166FS+3d | 11d | 0d |  |
| 168 | 1.5.5.3.1.3 | RC S.O.G | 15d | 2010-09-30 | 2010-10-17 | 167 | 11d | 0d |  |
| 169 | 1.5.5.3.1.4 | Masonary work | 15d | 2010-10-12 | 2010-10-28 | 168FS-5d | 11d | 0d |  |
| 170 | 1.5.5.3.1.5 | Plaster work | 15d | 2010-10-24 | 2010-11-09 | 169FS-5d | 34d | 0d |  |
| 171 | 1.5.5.3.1.6 | Painting Work 1st fix | 10d | 2010-11-04 | 2010-11-21 | 170FS-5d | 34d |  |  |
| 172 | 1.5.5.3.2 | **Electromechanical Works** | 46d | 2010-10-20 | 2010-12-18 |  | 11d |  |  |
| 173 | 1.5.5.3.2.1 | Mechanical Work | 22d | 2010-10-20 | 2010-11-14 | 169FS-8d | 35d |  |  |
| 174 | 1.5.5.3.2.2 | Electrical Work | 22d | 2010-10-20 | 2010-11-14 | 169FS-8d | 11d | 0d |  |
| 175 | 1.5.5.3.2.3 | Plumbing Work | 22d | 2010-10-20 | 2010-11-14 | 169FS-8d | 35d |  |  |
| 176 | 1.5.5.3.2.4 | Electrical Works For Electrical Room | 20d | 2010-11-25 | 2010-12-18 | 174FS+4d | 11d |  |  |

| ID | WBS | Task | Type | Duration | Start | Finish | Predecessors | Total slack | Free slack | Constraint |
| --- | --- | --- | --- | --- | --- | --- | --- | --- | --- | --- |
| 177 | 1.5.5.3.3 | **Finishing** |  | 22d | 2010-10-20 | 2010-11-14 |  | 35d |  |  |
| 178 | 1.5.5.3.3.1 | Finish Works |  | 22d | 2010-10-20 | 2010-11-14 | 169FS-8d | 35d |  |  |
| 179 | 1.5.6 | **3.8 - External Works** |  | 80d? | 2010-09-07 | 2010-12-21 |  | 8d |  |  |
| 180 | 1.5.6.1 | **Mech. Works** |  | 75d | 2010-09-19 | 2010-12-21 |  | 8d |  |  |
| 181 | 1.5.6.1.1 | Complete Fire fighting Tanks ( by others ) | milestone | 0d | 2010-09-19 | 2010-09-19 | 3FS+90d | 8d | 0d |  |
| 182 | 1.5.6.1.2 | External Fire Fighting Work |  | 75d | 2010-09-20 | 2010-12-21 | 181 | 8d |  |  |
| 183 | 1.5.6.1.3 | External plumbing Plumbing Work |  | 75d | 2010-09-20 | 2010-12-21 | 3FS+90d | 8d |  |  |
| 184 | 1.5.6.2 | **Electrical Works** |  | 80d? | 2010-09-07 | 2010-12-21 |  | 8d |  |  |
| 185 | 1.5.6.2.1 | Supply for transformers ( by Owner ) | milestone | 0d | 2010-09-19 | 2010-09-19 | 3FS+90d | 62d | 0d |  |
| 186 | 1.5.6.2.2 | Supply for generator ( by Owner ) |  | 1d? | 2010-09-20 | 2010-09-20 | 185SS | 62d | 0d |  |
| 187 | 1.5.6.2.3 | Electrical Work on electrical Room ( By Gama ) |  | 20d | 2010-09-21 | 2010-10-13 | 186 | 62d |  |  |
| 188 | 1.5.6.2.4 | Installation of generator( By Gama) |  | 5d | 2010-09-21 | 2010-09-26 | 186 | 77d | 0d |  |
| 189 | 1.5.6.2.5 | UPVC conduit &(L.V.& M.T. cables) |  | 14d | 2010-09-07 | 2010-09-29 | 185FS-5d | 74d |  |  |
| 190 | 1.5.6.2.6 | External Electrical Works |  | 75d | 2010-09-20 | 2010-12-21 | 188SS-1d | 8d |  |  |
| 191 | 1.5.7 | **3.9 - General Works** |  | 45d | 2010-11-03 | 2010-12-30 |  | 0d |  |  |
| 192 | 1.5.7.1 | **Final Finishing** |  | 45d | 2010-11-03 | 2010-12-30 |  | 0d |  |  |
| 193 | 1.5.7.1.1 | Aluminium windows install |  | 30d | 2010-11-03 | 2010-12-13 | 93FS-10d | 0d |  |  |
| 194 | 1.5.7.1.2 | Wooden Doors Install |  | 30d | 2010-11-03 | 2010-12-13 | 93FS-10d | 1d |  |  |
| 195 | 1.5.7.1.3 | Metal Doors Install |  | 30d | 2010-11-21 | 2010-12-25 | 93 | 0d |  |  |
| 196 | 1.5.7.1.4 | Final finishes |  | 14d | 2010-12-15 | 2010-12-30 | 193, 194, 195FF+5d, 198FF | 0d |  | finish no earlier than 2010-11-21 |
| 197 | 1.5.7.2 | **Final Electrical** |  | 30d | 2010-11-27 | 2010-12-30 |  | 0d |  |  |
| 198 | 1.5.7.2.1 | Installation Of Final Electrical Works |  | 30d | 2010-11-27 | 2010-12-30 | 193FS-15d | 0d |  |  |
| 199 | 1.5.7.3 | **Final Mechanical** |  | 17d | 2010-12-12 | 2010-12-30 |  | 0d |  |  |
| 200 | 1.5.7.3.1 | Fire Fighting H.R & Sprinkers |  | 17d | 2010-12-12 | 2010-12-30 | 196FF | 0d |  |  |
