# FARM FRITES POTATO COLD STORE

Schedule from MS Project, 2012-10-01 to 2013-05-01, costs in $.
Grizli777

## Calendars

- Standard: Mon-Fri 08:00-12:00, 13:00-17:00; Sat-Sun 08:00-17:00.

## Schedule

| ID | WBS | Task | Type | Duration | Start | Finish | Predecessors | Total slack | Free slack | Deadline |
| --- | --- | --- | --- | --- | --- | --- | --- | --- | --- | --- |
| 1 | 1 | **MILESTONES** |  | 219d | 2012-10-01 | 2013-04-30 |  | 1d |  |  |
| 2 | 1.1 | Project Commencement Date | milestone | 0d | 2012-10-01 | 2012-10-01 | 5 | 220d |  |  |
| 3 | 1.2 | Site handing over to the contractor | milestone | 0d | 2012-10-01 | 2012-10-01 |  | 220d | 0d |  |
| 4 | 1.3 | Contract agreement | milestone | 0d | 2012-10-01 | 2012-10-01 | 3 | 220d | 0d |  |
| 5 | 1.4 | Advanced payment | milestone | 0d | 2012-10-01 | 2012-10-01 | 4 | 220d | 0d |  |
| 6 | 1.5 | PART-A FINISH DATE | milestone | 0d | 2013-03-20 | 2013-03-20 | 51, 56, 57 | 11.5d |  | 2013-03-31 |
| 7 | 1.6 | PART-B FINISH DATE | milestone | 0d | 2013-04-25 | 2013-04-25 | 78, 80, 73, 165 | 6d | 5d |  |
| 8 | 1.7 | Project completion & final handing over | milestone | 0d | 2013-04-30 | 2013-04-30 | 105, 6, 7 | 1d | 0d |  |
| 9 | 2 | **MOBILIZATION** |  | 219d | 2012-10-01 | 2013-04-30 |  | 0d |  |  |
| 10 | 2.1 | Mobilization |  | 14d | 2012-10-01 | 2012-10-14 |  | 0d |  |  |
| 11 | 2.2 | Demobilization&removing all temporary facilities |  | 7d | 2013-04-23 | 2013-04-30 | 8FF | 1d |  |  |
| 12 | 3 | **ENGINEERING** |  | 43d | 2012-10-01 | 2012-11-12 |  | 48d |  |  |
| 13 | 3.1 | **Material aprroval** |  | 28d | 2012-10-01 | 2012-10-28 |  | 48d |  |  |
| 14 | 3.1.1 | Concrete mix design | milestone | 0d | 2012-10-01 | 2012-10-01 | 10SS+1d | 219d |  |  |
| 15 | 3.1.2 | Sandwich panel | milestone | 0d | 2012-10-14 | 2012-10-14 | 10 | 112d | 0d |  |
| 16 | 3.1.3 | Steel structure | milestone | 0d | 2012-10-14 | 2012-10-14 | 10 | 25d | 0d |  |
| 17 | 3.1.4 | Corrugated sheets | milestone | 0d | 2012-10-28 | 2012-10-28 | 10FS+15d | 60.5d | 0d |  |
| 18 | 3.2 | **Shopdrawings submittal&approval** |  | 16d | 2012-10-28 | 2012-11-12 |  | 35d |  |  |
| 19 | 3.2.1 | Sandwich panel submittal | milestone | 0d | 2012-10-28 | 2012-10-28 | 27FS+14d | 112d | 0d |  |
| 20 | 3.2.2 | Steel structure submittal | milestone | 0d | 2012-10-28 | 2012-10-28 | 28FS+14d | 25d | 0d |  |
| 21 | 3.2.3 | Sandwich panel approval | milestone | 0d | 2012-11-01 | 2012-11-01 | 19FS+5d | 112d | 0d |  |
| 22 | 3.2.4 | Steel structure approval | milestone | 0d | 2012-11-01 | 2012-11-01 | 20FS+5d | 25d | 0d |  |
| 23 | 3.2.5 | Corrugated sheets submittal | milestone | 0d | 2012-11-07 | 2012-11-07 | 29FS+10d | 60.5d | 0d |  |
| 24 | 3.2.6 | Corrugated sheets approval | milestone | 0d | 2012-11-12 | 2012-11-12 | 23FS+5d | 60.5d | 0d |  |

| ID | WBS | Task | Type | Duration | Start | Finish | Predecessors | Total slack | Free slack | Cost | Text3 | Text10 | Text1 | Text2 |
| --- | --- | --- | --- | --- | --- | --- | --- | --- | --- | --- | --- | --- | --- | --- |
| 25 | 4 | **PROCUREMENT** |  | 94d | 2012-10-14 | 2013-01-13 |  | 35d |  |  |  |  |  |  |
| 26 | 4.1 | **Purchase order** |  | 15d | 2012-10-14 | 2012-10-28 |  | 35d |  |  |  |  |  |  |
| 27 | 4.1.1 | Sandwich panel | milestone | 0d | 2012-10-14 | 2012-10-14 | 15 | 112d | 0d |  |  |  |  |  |
| 28 | 4.1.2 | Steel structure | milestone | 0d | 2012-10-14 | 2012-10-14 | 16 | 25d | 0d |  |  |  |  |  |
| 29 | 4.1.3 | Corrugated sheets | milestone | 0d | 2012-10-28 | 2012-10-28 | 17 | 60.5d | 0d |  |  |  |  |  |
| 30 | 4.2 | **Delivery date** |  | 15d | 2012-12-29 | 2013-01-13 |  | 35d |  |  |  |  |  |  |
| 31 | 4.2.1 | Corrugated sheets | milestone | 0d | 2013-01-09 | 2013-01-09 | 24FS+60d | 60.5d | 38d |  |  |  |  |  |
| 32 | 4.2.2 | Sandwich panel | milestone | 0d | 2013-01-13 | 2013-01-13 | 21FS+75d | 112d |  |  |  |  |  |  |
| 33 | 4.2.3 | Steel structure |  | 10d | 2012-12-29 | 2013-01-08 | 22FS+60d | 25d |  |  |  |  |  |  |
| 34 | 5 | **CONSTRUCTION** |  | 218d | 2012-10-03 | 2013-05-01 |  | 0d |  | 22,584,953 |  |  |  |  |
| 35 | 5.1 | **Potato cold store** |  | 212d | 2012-10-03 | 2013-04-25 |  | 6d |  | 17,276,022 | COLD STORE | 10 |  |  |
| 36 | 5.1.1 | **PART-A (FROM AXE B-1 TO AXE B-10)** |  | 175d | 2012-10-03 | 2013-03-20 |  | 6d |  | 8,625,146 | COLD STORE | 10 |  |  |
| 37 | 5.1.1.1 | **CIVIL WORKS** |  | 167d | 2012-10-03 | 2013-03-13 |  | 6d |  | 7,744,829 | COLD STORE | 10 |  |  |
| 38 | 5.1.1.1.1 | Excavation |  | 20d | 2012-10-03 | 2012-10-22 | 10SS+2d | 1d | 0d | 100,000 | COLD STORE | 10 |  |  |
| 39 | 5.1.1.1.2 | Soil immersion & copmacting |  | 20d | 2012-10-06 | 2012-10-25 | 38SS+3d | 1d | 0d |  | COLD STORE | 10 |  |  |
| 40 | 5.1.1.1.3 | Plain Concrete for strip footings |  | 21d | 2012-10-07 | 2012-10-28 | 39SS+2d | 1d | 0d | 284,734 | COLD STORE | 10 |  |  |
| 41 | 5.1.1.1.4 | R.C. for strip footings |  | 21d | 2012-10-14 | 2012-11-03 | 40SS+7d | 1d | 0d | 1,315,983.04 | COLD STORE | 10 |  |  |
| 42 | 5.1.1.1.5 | Footing insulations |  | 21d | 2012-10-29 | 2012-11-18 | 41SS+15d | 1d | 0d | 58,000 | COLD STORE | 10 | 10 |  |
| 43 | 5.1.1.1.6 | R.C for pedestals |  | 40d | 2012-12-02 | 2013-01-10 | 41FS+30d | 23d |  |  | COLD STORE | 10 |  |  |
| 44 | 5.1.1.1.7 | Backfilling around foundations |  | 30d | 2012-11-03 | 2012-12-02 | 42SS+6d | 1d | 0d | 22,080 | COLD STORE | 10 | 12 |  |
| 45 | 5.1.1.1.8 | P.C for S.O.G -10 cm |  | 24d | 2012-11-15 | 2012-12-08 | 44SS+12d | 1d | 0d | 175,493 | COLD STORE | 10 |  | SOG |
| 46 | 5.1.1.1.9 | R.C for S.O.G under beams-20 cm |  | 42d | 2012-12-01 | 2013-01-10 | 54SS+7d | 1d | 0d | 677,146 | COLD STORE | 10 | 14 | SOG |
| 47 | 5.1.1.1.10 | R.C beams over S.O.G -90 cm |  | 42d | 2012-12-14 | 2013-01-23 | 46SS+14d | 1d | 0d | 1,095,404 | COLD STORE | 10 | 14 | SOG |
| 48 | 5.1.1.1.11 | R.C Walls&columns |  | 60d | 2012-12-24 | 2013-02-19 | 47SS+10d | 1d | 0d | 1,990,988.96 | COLD STORE | 10 | 21 | SOG |
| 49 | 5.1.1.1.12 | Steel structure erection |  | 30d | 2013-01-31 | 2013-03-01 | 48SS+40d, 43, 33 | 11d | 0d | 1,372,500 | COLD STORE | 10 | 30 | SOG |
| 50 | 5.1.1.1.13 | Corrugated sheets for roof erection |  | 24d | 2013-02-14 | 2013-03-09 | 49SS+14d, 31 | 55d |  | 481,500 | COLD STORE | 10 |  |  |
| 51 | 5.1.1.1.14 | Corrugated sheets for side walls |  | 24d | 2013-02-18 | 2013-03-13 | 49SS+10d, 55SS+8d, 31 | 19.5d | 8d | 171,000 | COLD STORE | 10 |  |  |

| ID | WBS | Task | Duration | Start | Finish | Predecessors | Total slack | Free slack | Cost | Text3 | Text10 | Text1 | Text2 |
| --- | --- | --- | --- | --- | --- | --- | --- | --- | --- | --- | --- | --- | --- |
| 52 | 5.1.1.2 | **ARCH WORKS** | 125d | 2012-11-20 | 2013-03-20 |  | 6d |  | 880,317 | COLD STORE | 10 |  |  |
| 53 | 5.1.1.2.1 | Heat insulation | 24d | 2012-11-20 | 2012-12-13 | 45SS+5d | 6d | 0d | 594,000 | COLD STORE | 10 |  |  |
| 54 | 5.1.1.2.2 | Water insulation | 27d | 2012-11-24 | 2012-12-20 | 53SS+4d | 6d | 0d | 198,000 | COLD STORE | 10 |  |  |
| 55 | 5.1.1.2.3 | Masonry works | 30d | 2013-02-10 | 2013-03-11 | 49SS+10d | 11.5d | 0d | 62,763 | COLD STORE | 10 |  |  |
| 56 | 5.1.1.2.4 | Internal plaster works | 25d | 2013-02-24 | 2013-03-20 | 55SS+15d | 11.5d | 0d | 12,777 | COLD STORE | 10 |  |  |
| 57 | 5.1.1.2.5 | External plaster | 25d | 2013-02-24 | 2013-03-20 | 55SS+15d | 11.5d | 0d | 12,777 | COLD STORE | 10 |  |  |
| 58 | 5.1.2 | **PART-B (FROM AXE-B10 TO AXE-B22)** | 209d | 2012-10-06 | 2013-04-25 |  | 6d |  | 8,650,876 | COLD STORE | 10 |  |  |
| 59 | 5.1.2.1 | **CIVIL WORKS** | 194d | 2012-10-06 | 2013-04-11 |  | 19d |  | 7,740,829 | COLD STORE | 10 |  |  |
| 60 | 5.1.2.1.1 | Excavation | 20d | 2012-10-06 | 2012-10-25 | 10SS+5d | 19d | 0d | 96,000 | COLD STORE | 10 |  |  |
| 61 | 5.1.2.1.2 | Soil immersion & copmacting | 20d | 2012-10-08 | 2012-10-28 | 60SS+3d | 19d | 0d |  | COLD STORE | 10 |  |  |
| 62 | 5.1.2.1.3 | Plain Concrete for strip footings | 21d | 2012-10-16 | 2012-11-05 | 61SS+8d | 19d | 0d | 284,734 | COLD STORE | 10 |  |  |
| 63 | 5.1.2.1.4 | R.C. for strip footings | 30d | 2012-10-23 | 2012-11-21 | 62SS+7d | 19d | 0d | 1,315,983.04 | COLD STORE | 10 |  |  |
| 64 | 5.1.2.1.5 | Footing insulations | 20d | 2012-11-06 | 2012-11-25 | 63SS+15d | 19d | 0d | 58,000 | COLD STORE | 10 | 10 |  |
| 65 | 5.1.2.1.6 | R.C for pedestals | 30d | 2012-11-21 | 2012-12-20 | 63 | 85d | 84d |  | COLD STORE | 10 |  |  |
| 66 | 5.1.2.1.7 | Backfilling around foundations | 30d | 2012-11-12 | 2012-12-11 | 64SS+6d | 19d | 0d | 22,080 | COLD STORE | 10 | 12 |  |
| 67 | 5.1.2.1.8 | P.C for S.O.G -10 cm | 24d | 2012-11-27 | 2012-12-20 | 66SS+15d | 19d | 0d | 175,493 | COLD STORE | 10 |  | SOG |
| 68 | 5.1.2.1.9 | R.C for S.O.G under beams-20 cm | 42d | 2012-12-28 | 2013-02-06 | 76SS+15d | 19d | 0d | 677,146 | COLD STORE | 10 | 14 | SOG |
| 69 | 5.1.2.1.10 | R.C beams over S.O.G -90 cm | 50d | 2013-01-10 | 2013-02-27 | 68SS+14d | 19d | 13d | 1,095,404 | COLD STORE | 10 | 14 | SOG |
| 70 | 5.1.2.1.11 | R.C Walls&columns | 45d | 2013-02-05 | 2013-03-20 | 69SS+14d, 48FS-15d | 6d | 5d | 1,990,988.96 | COLD STORE | 10 | 21 | SOG |
| 71 | 5.1.2.1.12 | Steel structure erection | 20d | 2013-03-06 | 2013-03-25 | 70FF+5d, 65, 33, 49 | 6d | 0d | 1,372,500 | COLD STORE | 10 | 30 | SOG |
| 72 | 5.1.2.1.13 | Corrugated sheets for roof erection | 20d | 2013-03-16 | 2013-04-04 | 71SS+10d, 31 | 28d |  | 481,500 | COLD STORE | 10 |  |  |
| 73 | 5.1.2.1.14 | Corrugated sheets for side walls | 20d | 2013-03-23 | 2013-04-11 | 71SS+10d, 77FS-13d, 31 | 21d | 15d | 171,000 | COLD STORE | 10 |  |  |
| 74 | 5.1.2.2 | **ARCH WORKS** | 146d | 2012-12-05 | 2013-04-25 |  | 6d |  | 910,047 | COLD STORE |  |  |  |
| 75 | 5.1.2.2.1 | Heat insulation | 24d | 2012-12-05 | 2012-12-28 | 67SS+9d | 19d | 0d | 594,000 | COLD STORE | 10 |  |  |
| 76 | 5.1.2.2.2 | Water insulation | 27d | 2012-12-13 | 2013-01-08 | 75SS+8d | 19d | 0d | 198,000 | COLD STORE | 10 |  |  |
| 77 | 5.1.2.2.3 | Masonry works | 20d | 2013-03-16 | 2013-04-04 | 71SS+10d | 6d | 0d | 62,763 | COLD STORE | 10 |  |  |
| 78 | 5.1.2.2.4 | Internal plaster works | 30d | 2013-03-25 | 2013-04-23 | 77SS+10d | 8d | 2d | 12,777 | COLD STORE | 10 |  |  |
| 79 | 5.1.2.2.5 | External plaster | 30d | 2013-03-25 | 2013-04-23 | 77SS+10d | 6d | 0d | 12,777 | COLD STORE | 10 |  |  |
| 80 | 5.1.2.2.6 | Dry mix painting | 20d | 2013-04-06 | 2013-04-25 | 79SS+12d | 6d | 0d | 29,730 | COLD STORE | 10 |  |  |

| ID | WBS | Task | Duration | Start | Finish | Predecessors | Total slack | Free slack | Cost |
| --- | --- | --- | --- | --- | --- | --- | --- | --- | --- |
| 81 | 5.2 | **Admin building** | 186d | 2012-11-03 | 2013-05-01 |  | 0d |  | 1,213,797 |
| 82 | 5.2.1 | **Foundation works** | 53d | 2012-11-03 | 2012-12-23 |  | 0d |  | 83,689 |
| 83 | 5.2.1.1 | Excavation | 7d | 2012-11-03 | 2012-11-09 | 10FS+20d | 0d |  | 10,100 |
| 84 | 5.2.1.2 | P.C & R.C footings | 20d | 2012-11-09 | 2012-11-28 | 83 | 0d |  | 41,831 |
| 85 | 5.2.1.3 | Ground Floor Columns | 7d | 2012-11-29 | 2012-12-05 | 84 | 0d |  |  |
| 86 | 5.2.1.4 | Masonry under S.O.G | 7d | 2012-12-05 | 2012-12-12 | 85 | 0d |  | 3,622 |
| 87 | 5.2.1.5 | Footing Insulations | 5d | 2012-12-12 | 2012-12-17 | 86 | 0d |  | 3,132 |
| 88 | 5.2.1.6 | Back filling around foundations | 7d | 2012-12-17 | 2012-12-23 | 87 | 0d |  | 25,004 |
| 89 | 5.2.2 | **Concrete works** | 77d | 2012-12-24 | 2013-03-08 |  | 0d |  | 292,570 |
| 90 | 5.2.2.1 | Ground Floor Slab | 14d | 2012-12-24 | 2013-01-06 | 88 | 0d |  | 35,870 |
| 91 | 5.2.2.2 | First floor Columns | 7d | 2013-01-06 | 2013-01-13 | 90 | 0d |  | 35,870 |
| 92 | 5.2.2.3 | First Floor Slab | 14d | 2013-01-13 | 2013-01-26 | 91 | 0d |  | 35,870 |
| 93 | 5.2.2.4 | S.O.G | 7d | 2013-01-26 | 2013-02-02 | 92 | 37d | 13d | 41,480 |
| 94 | 5.2.2.5 | Second Floor Columns | 7d | 2013-01-26 | 2013-02-02 | 92 | 0d |  | 35,870 |
| 95 | 5.2.2.6 | Second Floor Slab | 14d | 2013-02-02 | 2013-02-16 | 94 | 60d | 0d | 35,870 |
| 96 | 5.2.2.7 | Third floor Columns | 7d | 2013-02-16 | 2013-02-22 | 95 | 60d | 0d | 35,870 |
| 97 | 5.2.2.8 | Third Floor Slab | 14d | 2013-02-23 | 2013-03-08 | 96 | 60d | 0d | 35,870 |
| 98 | 5.2.3 | **Finishing works** | 78d | 2013-02-15 | 2013-05-01 |  | 0d |  | 837,538 |
| 99 | 5.2.3.1 | Masonry works | 40d | 2013-02-15 | 2013-03-25 | 94FS+13d, 93 | 0d |  | 129,434 |
| 100 | 5.2.3.2 | Internal plaster works | 40d | 2013-02-24 | 2013-04-04 | 99SS+10d | 0d |  | 60,297 |
| 101 | 5.2.3.3 | Flooring works | 40d | 2013-03-06 | 2013-04-14 | 100SS+10d | 0d |  | 219,450 |
| 102 | 5.2.3.4 | Roofing works | 20d | 2013-03-08 | 2013-03-27 | 97 | 60d |  | 33,190 |
| 103 | 5.2.3.5 | External plaster works | 28d | 2013-03-16 | 2013-04-12 | 100SS+20d | 26d | 0d |  |
| 104 | 5.2.3.6 | Sanitary ware erection | 40d | 2013-03-16 | 2013-04-23 | 101SS+10d | 25d | 0d | 68,336 |
| 105 | 5.2.3.7 | Painting works | 40d | 2013-03-23 | 2013-04-30 | 104SS+7d | 25d |  | 90,020 |
| 106 | 5.2.3.8 | Doors&windows | 30d | 2013-04-02 | 2013-05-01 | 101FS-12d | 0d |  | 218,478 |
| 107 | 5.2.3.9 | Dry mix works | 18d | 2013-04-12 | 2013-04-29 | 103 | 26d |  | 18,333 |

| ID | WBS | Task | Duration | Start | Finish | Predecessors | Total slack | Free slack | Cost |
| --- | --- | --- | --- | --- | --- | --- | --- | --- | --- |
| 108 | 5.3 | **Water tank** | 184d | 2012-11-03 | 2013-04-29 |  | 2d |  | 382,625 |
| 109 | 5.3.1 | **Civil works** | 74d | 2012-11-03 | 2013-01-13 |  | 2d |  | 190,740 |
| 110 | 5.3.1.1 | Excavation | 4d | 2012-11-03 | 2012-11-06 | 10FS+20d | 26d | 0d | 17,722 |
| 111 | 5.3.1.2 | Plain Concrete Footing | 7d | 2012-11-06 | 2012-11-13 | 110 | 26d | 0d | 20,407 |
| 112 | 5.3.1.3 | Shuttering for R.C footing & R.C Steel Fixing & Inspection & Casting | 14d | 2012-11-13 | 2012-11-26 | 111 | 26d | 0d | 49,257 |
| 113 | 5.3.1.4 | Walls shuttering & steel fixing & Inspection & Casting | 30d | 2012-11-27 | 2012-12-25 | 112 | 26d | 0d | 54,097 |
| 114 | 5.3.1.5 | R.C for tank roof | 14d | 2012-12-26 | 2013-01-08 | 113 | 26d | 0d | 49,257 |
| 115 | 5.3.1.6 | Shuttering Remove for Tanks | 5d | 2013-01-08 | 2013-01-13 | 114 | 26d | 0d |  |
| 116 | 5.3.2 | **Arch works** | 110d | 2013-01-13 | 2013-04-29 |  | 2d |  | 191,885 |
| 117 | 5.3.2.1 | Epoxy insulation | 14d | 2013-01-13 | 2013-01-26 | 115 | 26d | 0d |  |
| 118 | 5.3.2.2 | Man-hole works | 25d | 2013-01-13 | 2013-02-06 | 115 | 111d |  | 7,500 |
| 119 | 5.3.2.3 | BITUMINOUS INSULATION&back filling | 14d | 2013-01-26 | 2013-02-09 | 117 | 26d | 0d | 38,784 |
| 120 | 5.3.2.4 | Masonry for bituminous insulation protection | 14d | 2013-02-09 | 2013-02-22 | 119 | 26d | 0d | 16,200 |
| 121 | 5.3.2.5 | Ceramic works for walls & floors | 14d | 2013-02-23 | 2013-03-08 | 120 | 26d | 0d | 41,530 |
| 122 | 5.3.2.6 | Internal plaster works | 14d | 2013-03-08 | 2013-03-21 | 121 | 26d | 0d | 3,911 |
| 123 | 5.3.2.7 | Roofing works | 14d | 2013-03-22 | 2013-04-04 | 122 | 26d | 0d | 16,110 |
| 124 | 5.3.2.8 | Metal works erection | 12d | 2013-04-04 | 2013-04-15 | 123 | 26d | 0d | 63,890 |
| 125 | 5.3.2.9 | Internal painting works | 14d | 2013-04-16 | 2013-04-29 | 124 | 26d |  | 3,960 |
| 126 | 5.4 | **Layout works** | 156d | 2012-12-01 | 2013-05-01 |  | 0d |  | 3,074,755 |
| 127 | 5.4.1 | **Electricity& Security room** | 150d | 2012-12-01 | 2013-04-25 |  | 6d |  | 404,679 |
| 128 | 5.4.1.1 | Concrete works | 60d | 2012-12-01 | 2013-01-28 | 10FS+50d | 30d | 0d | 158,149 |
| 129 | 5.4.1.2 | Finishing works | 90d | 2013-01-28 | 2013-04-25 | 128 | 30d |  | 246,530 |
| 130 | 5.4.2 | **Fence works** | 122d | 2012-12-21 | 2013-04-17 |  | 14d |  | 1,123,902 |
| 131 | 5.4.2.1 | Excavation | 20d | 2012-12-21 | 2013-01-09 | 10FS+70d | 38d | 0d | 226,190 |
| 132 | 5.4.2.2 | Foundation works | 30d | 2012-12-30 | 2013-01-28 | 131SS+10d | 38d | 0d | 258,253 |
| 133 | 5.4.2.3 | R.C columns | 30d | 2013-01-14 | 2013-02-12 | 132SS+15d | 38d | 0d |  |
| 134 | 5.4.2.4 | Footing insulation | 20d | 2013-01-28 | 2013-02-17 | 133SS+15d | 38d | 0d | 23,200 |
| 135 | 5.4.2.5 | Masonry works | 30d | 2013-02-07 | 2013-03-08 | 134SS+10d | 38d | 0d | 188,289 |
| 136 | 5.4.2.6 | Plaster works | 30d | 2013-02-22 | 2013-03-22 | 135SS+15d | 38d | 0d | 108,279 |
| 137 | 5.4.2.7 | Metal works | 7d | 2013-03-23 | 2013-03-29 | 136 | 38d | 0d | 241,650 |
| 138 | 5.4.2.8 | Dry mix painting works | 20d | 2013-03-29 | 2013-04-17 | 137, 136 | 38d |  | 78,041 |

| ID | WBS | Task | Duration | Start | Finish | Predecessors | Total slack | Free slack | Cost |
| --- | --- | --- | --- | --- | --- | --- | --- | --- | --- |
| 139 | 5.4.3 | **Bascule balance** | 106d | 2013-01-19 | 2013-05-01 |  | 0d |  | 276,174 |
| 140 | 5.4.3.1 | Excavation works | 7d | 2013-01-19 | 2013-01-25 | 10FS+100d | 0d |  | 6,551 |
| 141 | 5.4.3.2 | Concrete foundations | 30d | 2013-01-26 | 2013-02-23 | 140 | 0d |  | 19,091 |
| 142 | 5.4.3.3 | R.C for walls | 15d | 2013-02-23 | 2013-03-10 | 141 | 0d |  | 31,484 |
| 143 | 5.4.3.4 | Insulation&back filling works | 20d | 2013-03-10 | 2013-03-29 | 142 | 0d |  | 25,259 |
| 144 | 5.4.3.5 | S.O.G works | 14d | 2013-03-29 | 2013-04-12 | 143 | 0d |  | 23,789 |
| 145 | 5.4.3.6 | Metal works | 20d | 2013-04-12 | 2013-05-01 | 144 | 0d |  | 170,000 |
| 146 | 5.4.4 | **Roads** | 75d | 2013-01-28 | 2013-04-11 |  | 21d |  | 1,270,000 |
| 147 | 5.4.4.1 | Roads paving | 30d | 2013-01-28 | 2013-02-26 | 10FS+110d | 45d | 0d | 990,000 |
| 148 | 5.4.4.2 | Curb stone installation | 20d | 2013-02-26 | 2013-03-17 | 147 | 45d | 0d | 142,500 |
| 149 | 5.4.4.3 | P.C for side walks | 25d | 2013-03-18 | 2013-04-11 | 148 | 45d |  | 137,500 |
| 150 | 5.5 | **Service building** | 140d | 2012-11-03 | 2013-03-17 |  | 46d |  | 637,754 |
| 151 | 5.5.1 | **Concrete works** | 79d | 2012-11-03 | 2013-01-18 |  | 46d |  | 251,858 |
| 152 | 5.5.1.1 | Excavation | 7d | 2012-11-03 | 2012-11-09 | 10FS+20d | 70d | 0d | 12,843 |
| 153 | 5.5.1.2 | P.C & R.C footings | 21d | 2012-11-09 | 2012-11-29 | 152 | 70d | 0d | 63,815 |
| 154 | 5.5.1.3 | Ground Floor Columns | 7d | 2012-11-30 | 2012-12-06 | 153 | 70d | 0d | 14,133 |
| 155 | 5.5.1.4 | Masonry under S.O.G | 7d | 2012-12-06 | 2012-12-13 | 154 | 70d | 0d | 10,349 |
| 156 | 5.5.1.5 | Footing Insulations | 3d | 2012-12-13 | 2012-12-16 | 155 | 70d | 0d | 1,044 |
| 157 | 5.5.1.6 | Back filling around foundations | 3d | 2012-12-16 | 2012-12-19 | 156 | 70d | 0d | 32,651 |
| 158 | 5.5.1.7 | Ground Floor Slab | 14d | 2012-12-19 | 2013-01-01 | 157 | 70d | 0d | 58,075 |
| 159 | 5.5.1.8 | S.O.G for ground floor | 10d | 2013-01-08 | 2013-01-18 | 158FS+7d | 70d | 0d | 58,948 |
| 160 | 5.5.2 | **Finishing works** | 61d | 2013-01-18 | 2013-03-17 |  | 46d |  | 385,896 |
| 161 | 5.5.2.1 | Masonry works | 14d | 2013-01-18 | 2013-01-31 | 159 | 70d | 0d | 43,798 |
| 162 | 5.5.2.2 | Plaster works | 14d | 2013-01-31 | 2013-02-14 | 161 | 70d | 0d | 18,741 |
| 163 | 5.5.2.3 | Roofing works | 20d | 2013-01-31 | 2013-02-19 | 161 | 90d | 20d | 34,548 |
| 164 | 5.5.2.4 | Plumbing works | 7d | 2013-02-14 | 2013-02-20 | 162 | 70d | 0d | 80,660 |
| 165 | 5.5.2.5 | Pavement around building | 30d | 2013-02-14 | 2013-03-15 | 162 | 73d |  | 12,390 |
| 166 | 5.5.2.6 | Flooring works | 14d | 2013-02-21 | 2013-03-06 | 164 | 70d | 0d | 92,047 |
| 167 | 5.5.2.7 | Doors&windows | 5d | 2013-03-06 | 2013-03-11 | 166 | 70d | 0d | 65,055 |
| 168 | 5.5.2.8 | Painting works | 7d | 2013-03-11 | 2013-03-17 | 167, 163 | 70d |  | 38,657 |
