# Gemma 3 27B - EXCELLENT

Schedule from MS Project, 2025-06-01 to 2027-04-06, costs in $.

## Calendars

- Standard: Mon-Fri 08:00-12:00, 13:00-17:00; Sat-Sun off.

## Resources

| Resource | Rate |
| --- | --- |
| Mobilization & Management | 100 |
| Civils Subcontractor | 50 |
| Concrete Subcontractor | 50 |
| Plumbing Subcontractor | 40 |
| Façade Subcontractor | 60 |
| Electrical Subcontractor | 45 |
| HVAC Subcontractor | 45 |
| Internal Finishes Subcontractor | 50 |
| Excavator | 1000 |
| Concrete Pump | 1500 |
| Electrical Generators | 250 |
| Material Movement on site | 100 |

## Schedule

| ID | Task | Type | Duration | Start | Finish | Predecessors | Total slack | Free slack | Constraint | Resources | Work | Cost |
| --- | --- | --- | --- | --- | --- | --- | --- | --- | --- | --- | --- | --- |
| 1 | Project Start Mobilization | milestone | 0d | 2025-06-01 | 2025-06-01 |  | 0d |  | start no earlier than 2025-06-01 | Mobilization & Management [500%]; Material Movement on site; Electrical Generators |  |  |
| 2 | Earth Works |  | 45d | 2025-06-02 | 2025-08-01 | 1 | 0d |  | start no earlier than 2025-06-01 | Civils Subcontractor [1500%]; Excavator [200%]; Electrical Generators [200%] | 5400h | 272,500 |
| 3 | Concrete Skeleton Works |  | 180d | 2025-08-04 | 2026-04-10 | 2 | 0d |  | start no earlier than 2025-06-01 | Concrete Subcontractor [2000%]; Material Movement on site [300%]; Concrete Pump [200%]; Electrical Generators [500%] | 28800h | 1,444,550 |
| 4 | Plumbing Water Supply First Fix |  | 60d | 2025-08-25 | 2025-11-14 | 3SS+15d | 272d | 0d | start no earlier than 2025-06-01 | Plumbing Subcontractor [1500%]; Material Movement on site [200%]; Electrical Generators [300%] | 7200h | 288,950 |
| 5 | Plumbing Drainage First Fix |  | 50d | 2025-08-25 | 2025-10-31 | 3SS+15d | 282d | 10d | start no earlier than 2025-06-01 | Plumbing Subcontractor [1000%]; Material Movement on site [200%]; Electrical Generators [200%] | 4000h | 160,700 |
| 6 | Exterior Walls Installation |  | 90d | 2026-04-13 | 2026-08-14 | 3 | 97d | 0d | start no earlier than 2025-06-01 | Façade Subcontractor [2500%]; Material Movement on site [300%] | 18000h | 1,080,300 |
| 7 | Exterior Plastering Works |  | 40d | 2026-08-17 | 2026-10-09 | 6 | 127d |  | start no earlier than 2025-06-01 | Façade Subcontractor [1500%]; Material Movement on site [300%] | 4800h | 288,300 |
| 8 | Waterproofing for Wet Areas |  | 30d | 2026-04-13 | 2026-05-22 | 3 | 0d |  | start no earlier than 2025-06-01 | Internal Finishes Subcontractor [1500%]; Material Movement on site [200%] | 3600h | 180,200 |
| 9 | Electrical Wiring First Fix |  | 70d | 2025-09-01 | 2025-12-05 | 3SS+20d | 247d |  | start no earlier than 2025-06-01 | Electrical Subcontractor [1000%]; Electrical Generators [500%]; Material Movement on site [200%] | 5600h | 253,450 |
| 10 | Ceramic Tile Works |  | 112d | 2026-06-15 | 2026-11-17 | 8FS+15d | 0d |  | start no earlier than 2025-06-01 | Internal Finishes Subcontractor [2000%]; Electrical Generators [200%]; Material Movement on site [200%] | 17920h | 896,700 |
| 11 | Doors and Windows Installation |  | 60d | 2026-08-31 | 2026-11-20 | 6FS+10d | 97d |  | start no earlier than 2025-06-01 | Internal Finishes Subcontractor [500%]; Electrical Generators [200%]; Material Movement on site [200%] | 2400h | 120,700 |
| 12 | Elevator Installation |  | 80d | 2026-06-08 | 2026-09-25 | 3FS+40d | 137d |  | start no earlier than 2025-06-01 | Electrical Subcontractor [500%]; Electrical Generators [400%]; Material Movement on site [300%] | 3200h | 145,300 |
| 13 | Interior Walls Installation |  | 90d | 2026-05-25 | 2026-09-25 | 3FS+30d | 17d | 0d | start no earlier than 2025-06-01 | Internal Finishes Subcontractor [500%]; Electrical Generators [200%]; Material Movement on site [200%] | 3600h | 180,700 |
| 14 | Interior Plastering Works |  | 70d | 2026-09-28 | 2027-01-01 | 13 | 17d | 0d | start no earlier than 2025-06-01 | Internal Finishes Subcontractor [500%]; Electrical Generators [200%]; Material Movement on site [200%] | 2800h | 140,700 |
| 15 | Painting Works |  | 50d | 2027-01-04 | 2027-03-12 | 14 | 17d |  | start no earlier than 2025-06-01 | Internal Finishes Subcontractor [500%]; Electrical Generators [200%]; Material Movement on site [200%] | 2000h | 100,700 |
| 16 | Electrical Wiring Second Fix |  | 60d | 2026-11-18 | 2027-02-09 | 10, 9 | 0d |  | start no earlier than 2025-06-01 | Electrical Subcontractor [2000%]; Electrical Generators [300%]; Material Movement on site [400%] | 9600h | 433,150 |
| 17 | Plumbing Second Fix |  | 50d | 2025-11-17 | 2026-01-23 | 5, 4 | 272d |  | start no earlier than 2025-06-01 | Plumbing Subcontractor [1500%]; Electrical Generators [200%]; Material Movement on site [200%] | 6000h | 240,700 |
| 18 | Heating System Second Fix |  | 40d | 2027-02-10 | 2027-04-06 | 16, 17 | 0d |  | start no earlier than 2025-06-01 | HVAC Subcontractor [3000%]; Electrical Generators [200%]; Material Movement on site [500%] | 9600h | 433,000 |
| 19 | Project End | milestone | 0d | 2027-04-06 | 2027-04-06 | 18 | 0d |  | start no earlier than 2025-06-01 |  |  |  |
