# Chipsy Sewage Plant

Schedule from MS Project, 2010-11-28 to 2011-05-25, status date 2011-02-26, costs in $, A marks actual dates.
NONE

## Calendars

- Standard: Mon-Thu 08:00-16:00; Fri off; Sat-Sun 08:00-17:00. Exceptions (off unless hours are given): 2011-01-28 to 2011-02-18 (FORCE MAJEURE).

## Resources

| Resource | Unit | Rate |
| --- | --- | --- |
| Carpenter |  | 21.6 |
| Carpenter assistant |  |  |
| Plain Concrete | cubic meter | 1 |
| Reinforced Concrete | cubic meter | 1 |
| Steel Fixer & Assistant |  |  |

## Schedule

| ID | WBS | Task | Type | Duration | Start | Finish | Predecessors | Complete | Remaining | Baseline start | Baseline finish | Baseline duration | Baseline 1 start | Baseline 1 finish | Total slack | Constraint |
| --- | --- | --- | --- | --- | --- | --- | --- | --- | --- | --- | --- | --- | --- | --- | --- | --- |
| 1 | G | **General** |  | 141.12d | 2010-11-28 A | 2011-05-25 |  |  | 141.12d | 2010-11-28 | 2011-05-02 | 137d | 2010-11-28 | 2011-05-25 | 0d |  |
| 2 | G | Start Project | milestone | 0d | 2010-11-28 A | 2010-11-28 A |  | 100% |  | 2010-11-28 | 2010-11-28 | 0d | 2010-11-28 | 2010-11-28 |  |  |
| 3 | G | Finish Project | milestone | 0d | 2011-05-25 | 2011-05-25 | 239, 234, 224, 229, 117, 143, 156, 191, 204, 219, 178 |  |  | 2011-05-02 | 2011-05-02 | 0d | 2011-05-25 | 2011-05-25 | 0d | start no earlier than 2011-05-01 |
| 4 | P | **Preparing Site** |  | 13.5d | 2010-11-28 A | 2010-12-12 A |  | 100% |  | 2010-11-28 | 2010-12-12 | 14d | 2010-11-28 | 2010-12-12 |  |  |
| 5 | P | Demolition for Adminstration Building |  | 6d | 2010-11-28 A | 2010-12-04 A | 2 | 100% |  | 2010-11-28 | 2010-12-04 | 6d | 2010-11-28 | 2010-12-04 |  |  |
| 6 | P | Mobilization |  | 13.5d | 2010-11-28 A | 2010-12-12 A | 2 | 100% |  | 2010-11-28 | 2010-12-12 | 14d | 2010-11-28 | 2010-12-12 |  |  |
| 7 | E | **Engineering** |  | 111d | 2010-11-28 A | 2011-04-21 |  | 99% | 0d | 2010-11-28 | 2011-04-02 | 111d | 2010-11-28 | 2011-04-21 | 9.12d |  |
| 8 | E | Receive Issue for Construction |  | 1d | 2010-11-28 A | 2010-11-28 A | 2 | 100% |  | 2010-11-28 | 2010-11-28 | 1d | 2010-11-28 | 2010-11-28 |  |  |
| 9 | E.1 | **Submittals** |  | 103d | 2010-11-28 A | 2011-04-13 |  | 99% | 0d | 2010-11-28 | 2011-03-24 | 103d | 2010-11-28 | 2011-04-13 | 9.12d |  |
| 10 | E.1.4,6,6',7 | **Tank 4,6,6',7&9 (Biological Treatment & Equilization & Soda-Washing &Physical SludgeTanks)** |  | 4.12d | 2010-11-28 A | 2010-12-02 A |  | 100% |  | 2010-11-28 | 2010-12-02 | 4d | 2010-11-28 | 2010-12-02 |  |  |
| 11 | E.1.4,6,6',7 | Excavation Layout Submittal | milestone | 0d | 2010-11-28 A | 2010-11-28 A | 8 | 100% |  | 2010-11-28 | 2010-11-28 | 0d | 2010-11-28 | 2010-11-28 |  | start no earlier than 2010-11-28 |
| 12 | E.1.4,6,6',7 | PC Submittal | milestone | 0d | 2010-11-28 A | 2010-11-28 A | 8FS+4d | 100% |  | 2010-11-28 | 2010-11-28 | 0d | 2010-11-28 | 2010-11-28 |  | start no earlier than 2010-12-02 |
| 13 | E.1.4,6,6',7 | RC Submittal | milestone | 0d | 2010-12-02 A | 2010-12-02 A | 8FS+7d | 100% |  | 2010-12-02 | 2010-12-02 | 0d | 2010-12-02 | 2010-12-02 |  | start no earlier than 2010-12-06 |
| 14 | E.1.1',8 | **Tank 1',8 (Pre Treated Influent Feeding & Filterate Water Collecting Pump Pit)** |  | 0d | 2010-12-21 A | 2010-12-21 A |  | 100% |  | 2010-12-21 | 2010-12-21 | 0d | 2010-12-21 | 2010-12-21 |  |  |
| 15 | E.1.1',8 | Excavation Layout Submittal | milestone | 0d | 2010-12-21 A | 2010-12-21 A | 8FS+23d | 100% |  | 2010-12-21 | 2010-12-21 | 0d | 2010-12-21 | 2010-12-21 |  | start no earlier than 2010-12-22 |
| 16 | E.1.1',8 | PC Submittal | milestone | 0d | 2010-12-21 A | 2010-12-21 A | 8FS+27d | 100% |  | 2010-12-21 | 2010-12-21 | 0d | 2010-12-21 | 2010-12-21 |  | start no earlier than 2010-12-27 |
| 17 | E.1.1',8 | RC Submittal | milestone | 0d | 2010-12-21 A | 2010-12-21 A | 8FS+30d | 100% |  | 2010-12-21 | 2010-12-21 | 0d | 2010-12-21 | 2010-12-21 |  | start no earlier than 2010-12-30 |
| 18 | E.1.9' | **Tank 9' (Sand Trap Channel)** |  | 4.25d | 2011-01-06 A | 2011-01-10 A |  | 100% |  | 2011-01-16 | 2011-01-24 | 7d | 2011-01-06 | 2011-01-10 |  |  |
| 19 | E.1.9' | Excavation Layout Submittal | milestone | 0d | 2011-01-06 A | 2011-01-06 A | 8FS+44d | 100% |  | 2011-01-16 | 2011-01-16 | 0d | 2011-01-06 | 2011-01-06 |  | start no earlier than 2011-01-16 |
| 20 | E.1.9' | PC Submittal | milestone | 0d | 2011-01-06 A | 2011-01-06 A | 8FS+48d | 100% |  | 2011-01-20 | 2011-01-20 | 0d | 2011-01-06 | 2011-01-06 |  | start no earlier than 2011-01-20 |
| 21 | E.1.9' | RC Submittal |  | 1d | 2011-01-10 A | 2011-01-10 A | 8FS+51d | 100% |  | 2011-01-24 | 2011-01-24 | 0d | 2011-01-10 | 2011-01-10 |  | start no earlier than 2011-01-24 |
| 22 | E.1.1 | **Tank1 (Pre-settling Influent Tank)** |  | 8.38d | 2011-01-13 A | 2011-01-22 A |  | 100% |  | 2011-03-06 | 2011-03-13 | 6d | 2011-01-13 | 2011-01-22 |  |  |
| 23 | E.1.1 | Excavation Layout Submittal | milestone | 0d | 2011-01-13 A | 2011-01-13 A | 8FS+87d | 100% |  | 2011-03-06 | 2011-03-06 | 0d | 2011-01-13 | 2011-01-13 |  | start no earlier than 2011-03-06 |
| 24 | E.1.1 | PC Submittal | milestone | 0d | 2011-01-13 A | 2011-01-13 A | 8FS+91d | 100% |  | 2011-03-10 | 2011-03-10 | 0d | 2011-01-13 | 2011-01-13 |  | start no earlier than 2011-03-10 |
| 25 | E.1.1 | RC Submittal |  | 1d | 2011-01-22 A | 2011-01-22 A | 8FS+93d | 100% |  | 2011-03-13 | 2011-03-13 | 0d | 2011-01-22 | 2011-01-22 |  | start no earlier than 2011-03-13 |

| ID | WBS | Task | Type | Duration | Start | Finish | Predecessors | Baseline start | Baseline finish | Baseline duration | Baseline 1 start | Baseline 1 finish | Total slack | Free slack | Constraint |
| --- | --- | --- | --- | --- | --- | --- | --- | --- | --- | --- | --- | --- | --- | --- | --- |
| 28 | E.1.3 | **(Sedimentation Unit 3)** |  | 6d | 2011-03-27 | 2011-04-03 |  | 2011-03-06 | 2011-03-13 | 6d | 2011-03-27 | 2011-04-03 | 9.12d |  |  |
| 29 | E.1.3 | Excavation Layout Submittal | milestone | 0d | 2011-03-27 | 2011-03-27 | 8FS+87d | 2011-03-06 | 2011-03-06 | 0d | 2011-03-27 | 2011-03-27 | 9.12d | 0d | start no earlier than 2011-03-06 |
| 30 | E.1.3 | PC Submittal | milestone | 0d | 2011-03-31 | 2011-03-31 | 8FS+91d | 2011-03-10 | 2011-03-10 | 0d | 2011-03-31 | 2011-03-31 | 9.12d | 0d | start no earlier than 2011-03-10 |
| 31 | E.1.3 | RC Submittal | milestone | 0d | 2011-04-03 | 2011-04-03 | 8FS+93d | 2011-03-13 | 2011-03-13 | 0d | 2011-04-03 | 2011-04-03 | 9.12d | 0d | start no earlier than 2011-03-13 |
| 32 | E.1.10 | **(Tank 10 (Biological Sludge Tank)** |  | 6d | 2011-03-27 | 2011-04-03 |  | 2011-03-06 | 2011-03-13 | 6d | 2011-03-27 | 2011-04-03 | 8.12d |  |  |
| 33 | E.1.10 | Excavation Layout Submittal | milestone | 0d | 2011-03-27 | 2011-03-27 | 8FS+87d | 2011-03-06 | 2011-03-06 | 0d | 2011-03-27 | 2011-03-27 | 8.12d | 0d | start no earlier than 2011-03-06 |
| 34 | E.1.10 | PC Submittal | milestone | 0d | 2011-03-31 | 2011-03-31 | 8FS+91d | 2011-03-10 | 2011-03-10 | 0d | 2011-03-31 | 2011-03-31 | 8.12d | 0d | start no earlier than 2011-03-10 |
| 35 | E.1.10 | RC Submittal | milestone | 0d | 2011-04-03 | 2011-04-03 | 8FS+93d | 2011-03-13 | 2011-03-13 | 0d | 2011-04-03 | 2011-04-03 | 8.12d | 0d | start no earlier than 2011-03-13 |
| 36 | E.1.5 | **Room 5 (Chemical Treatment & Operation Room** |  | 6d | 2011-03-27 | 2011-04-03 |  | 2011-03-06 | 2011-03-13 | 6d | 2011-03-27 | 2011-04-03 | 10.12d |  |  |
| 37 | E.1.5 | Excavation Layout Submittal | milestone | 0d | 2011-03-27 | 2011-03-27 | 8FS+87d | 2011-03-06 | 2011-03-06 | 0d | 2011-03-27 | 2011-03-27 | 10.12d | 0d | start no earlier than 2011-03-06 |
| 38 | E.1.5 | PC Submittal | milestone | 0d | 2011-03-31 | 2011-03-31 | 8FS+91d | 2011-03-10 | 2011-03-10 | 0d | 2011-03-31 | 2011-03-31 | 8.12d | 0d | start no earlier than 2011-03-08 |
| 39 | E.1.5 | RC Submittal | milestone | 0d | 2011-04-03 | 2011-04-03 | 8FS+93d | 2011-03-13 | 2011-03-13 | 0d | 2011-04-03 | 2011-04-03 | 10.12d | 0d | start no earlier than 2011-03-13 |
| 40 | E.1.12 | **Room 12 (Sludge Drying Equipment - Room)** |  | 6d | 2011-03-27 | 2011-04-03 |  | 2011-03-06 | 2011-03-13 | 6d | 2011-03-27 | 2011-04-03 | 9.12d |  |  |
| 41 | E.1.12 | Excavation Layout Submittal | milestone | 0d | 2011-03-27 | 2011-03-27 | 8FS+87d | 2011-03-06 | 2011-03-06 | 0d | 2011-03-27 | 2011-03-27 | 9.12d | 0d | start no earlier than 2011-03-06 |
| 42 | E.1.12 | PC Submittal | milestone | 0d | 2011-03-29 | 2011-03-29 | 8FS+89d | 2011-03-08 | 2011-03-08 | 0d | 2011-03-29 | 2011-03-29 | 9.12d | 0d | start no earlier than 2011-03-08 |
| 43 | E.1.12 | RC Submittal | milestone | 0d | 2011-04-03 | 2011-04-03 | 8FS+93d | 2011-03-13 | 2011-03-13 | 0d | 2011-04-03 | 2011-04-03 | 9.12d | 0d | start no earlier than 2011-03-13 |
| 44 | E.1.14&15 | **Room 14 & 15 (Laboratory-Service & Maitenance Rooms)** |  | 7d | 2011-03-27 | 2011-04-04 |  | 2011-03-06 | 2011-03-14 | 7d | 2011-03-27 | 2011-04-04 | 17.12d |  |  |
| 45 | E.1.14&15 | Excavation Layout Submittal | milestone | 0d | 2011-03-27 | 2011-03-27 | 8FS+87d | 2011-03-06 | 2011-03-06 | 0d | 2011-03-27 | 2011-03-27 | 18.12d | 0d | start no earlier than 2011-03-06 |
| 46 | E.1.14&15 | PC Submittal | milestone | 0d | 2011-03-30 | 2011-03-30 | 8FS+90d | 2011-03-09 | 2011-03-09 | 0d | 2011-03-30 | 2011-03-30 | 17.12d | 0d | start no earlier than 2011-03-09 |
| 47 | E.1.14&15 | RC Submittal | milestone | 0d | 2011-04-04 | 2011-04-04 | 8FS+94d | 2011-03-14 | 2011-03-14 | 0d | 2011-04-04 | 2011-04-04 | 17.12d | 0d | start no earlier than 2011-03-14 |
| 48 | E.1.6 | **Trench** |  | 16d | 2011-03-27 | 2011-04-13 |  | 2011-03-06 | 2011-03-24 | 16d | 2011-03-27 | 2011-04-13 | 9.12d |  |  |
| 49 | E.1.6 | Excavation Layout Submittal | milestone | 0d | 2011-03-27 | 2011-03-27 | 8FS+87d | 2011-03-06 | 2011-03-06 | 0d | 2011-03-27 | 2011-03-27 | 9.12d | 0d | start no earlier than 2011-03-06 |
| 50 | E.1.6 | PC Submittal | milestone | 0d | 2011-03-31 | 2011-03-31 | 8FS+91d | 2011-03-10 | 2011-03-10 | 0d | 2011-03-31 | 2011-03-31 | 9.12d | 0d | start no earlier than 2011-03-10 |
| 51 | E.1.6 | RC Submittal | milestone | 0d | 2011-04-13 | 2011-04-13 | 8FS+103d | 2011-03-24 | 2011-03-24 | 0d | 2011-04-13 | 2011-04-13 | 9.12d | 0d | start no earlier than 2011-03-24 |

| ID | WBS | Task | Type | Duration | Start | Finish | Predecessors | Complete | Remaining | Baseline start | Baseline finish | Baseline duration | Baseline 1 start | Baseline 1 finish | Total slack | Free slack | Constraint |
| --- | --- | --- | --- | --- | --- | --- | --- | --- | --- | --- | --- | --- | --- | --- | --- | --- | --- |
| 26 | E.1.D.L | **Disposal Line** |  | 0d | 2011-03-02 | 2011-03-02 |  |  |  | 2011-02-09 | 2011-02-09 | 0d | 2011-03-02 | 2011-03-02 | 13.12d |  |  |
| 27 | E.1.D.L | Disposal Line Submittals | milestone | 0d | 2011-03-02 | 2011-03-02 | 8FS+65d |  |  | 2011-02-09 | 2011-02-09 | 0d | 2011-03-02 | 2011-03-02 | 13.12d | 0d | start no earlier than 2011-02-09 |
| 52 | E.1.L.S | **Hard Scape Around Tanks & Rooms** |  | 0d | 2011-04-12 | 2011-04-12 |  |  |  | 2011-03-23 | 2011-03-23 | 0d | 2011-04-12 | 2011-04-12 | 8.12d |  |  |
| 53 | E.1.L.S | Hard Scope Submittalas | milestone | 0d | 2011-04-12 | 2011-04-12 | 8FS+102d |  |  | 2011-03-23 | 2011-03-23 | 0d | 2011-04-12 | 2011-04-12 | 8.12d | 0d | start no earlier than 2011-03-23 |
| 54 | E.2 | **Approvals** |  | 104.88d | 2010-12-04 A | 2011-04-21 |  | 99% | 0d | 2010-12-04 | 2011-04-02 | 105d | 2010-12-04 | 2011-04-21 | 9.12d |  |  |
| 55 | E.2.4,6,6',7 | **Tank 4,6,6',7&9 (Biological Treatment & Equilization & Soda-Washing &Physical SludgeTanks)** |  | 8.5d | 2010-12-04 A | 2010-12-13 A |  | 100% |  | 2010-12-04 | 2010-12-13 | 9d | 2010-12-04 | 2010-12-13 |  |  |  |
| 56 | E.2.4,6,6',7 | Excavation Layout Approval | milestone | 0d | 2010-12-04 A | 2010-12-04 A | 11FS+5d | 100% |  | 2010-12-04 | 2010-12-04 | 0d | 2010-12-04 | 2010-12-04 |  |  | start no earlier than 2010-12-04 |
| 57 | E.2.4,6,6',7 | PC Approval | milestone | 0d | 2010-12-10 A | 2010-12-10 A | 12FS+7d | 100% |  | 2010-12-10 | 2010-12-10 | 0d | 2010-12-10 | 2010-12-10 |  |  | start no earlier than 2010-12-10 |
| 58 | E.2.4,6,6',7 | RC Approval | milestone | 0d | 2010-12-13 A | 2010-12-13 A | 13FS+7d | 100% |  | 2010-12-13 | 2010-12-13 | 0d | 2010-12-13 | 2010-12-13 |  |  | start no earlier than 2010-12-13 |
| 59 | E.2.1',8 | **Tank 1',8 (Pre Treated Influent Feeding & Filterate Water Collecting Pump Pit)** |  | 26.12d | 2010-12-26 A | 2011-01-23 A |  | 100% |  | 2010-12-26 | 2011-01-08 | 12d | 2010-12-26 | 2011-01-23 |  |  |  |
| 60 | E.2.1',8 | Excavation Layout Approval | milestone | 0d | 2010-12-26 A | 2010-12-26 A | 15FS+7d | 100% |  | 2010-12-26 | 2010-12-26 | 0d | 2010-12-26 | 2010-12-26 |  |  | start no earlier than 2010-12-30 |
| 61 | E.2.1',8 | PC Approval | milestone | 0d | 2010-12-26 A | 2010-12-26 A | 16FS+7d | 100% |  | 2010-12-26 | 2010-12-26 | 0d | 2010-12-26 | 2010-12-26 |  |  | start no earlier than 2011-01-04 |
| 62 | E.2.1',8 | RC Approval |  | 1d | 2011-01-23 A | 2011-01-23 A | 17FS+7d | 100% |  | 2011-01-08 | 2011-01-08 | 0d | 2011-01-23 | 2011-01-23 |  |  | start no earlier than 2011-01-08 |
| 63 | E.2.9' | **Tank 9' (Sand Trap Channel)** |  | 4.12d | 2011-01-18 A | 2011-01-23 A |  | 100% |  | 2011-01-24 | 2011-02-01 | 7d | 2011-01-18 | 2011-01-23 |  |  |  |
| 64 | E.2.9' | Excavation Layout Approval |  | 1d | 2011-01-18 A | 2011-01-18 A | 19FS+7d | 100% |  | 2011-01-24 | 2011-01-24 | 0d | 2011-01-18 | 2011-01-18 |  |  | start no earlier than 2011-01-24 |
| 65 | E.2.9' | PC Approval |  | 1d | 2011-01-18 A | 2011-01-18 A | 20FS+7d | 100% |  | 2011-01-29 | 2011-01-29 | 0d | 2011-01-18 | 2011-01-18 |  |  | start no earlier than 2011-01-29 |
| 66 | E.2.9' | RC Approval | milestone | 0d | 2011-01-23 A | 2011-01-23 A | 21FS+7d | 100% |  | 2011-02-01 | 2011-02-01 | 0d | 2011-01-23 | 2011-01-23 |  |  | start no earlier than 2011-02-01 |
| 67 | E.2.1 | **Tank1 (Pre-settling Influent Tank)** |  | 37.5d | 2011-01-18 A | 2011-03-21 |  |  | 37.5d | 2011-03-14 | 2011-03-21 | 6d | 2011-01-18 | 2011-03-21 | 26.75d |  |  |
| 68 | E.2.1 | Excavation Layout Approval | milestone | 0d | 2011-01-18 A | 2011-01-18 A | 23FS+7d | 100% |  | 2011-03-14 | 2011-03-14 | 0d | 2011-01-18 | 2011-01-18 |  |  | start no earlier than 2011-03-14 |
| 69 | E.2.1 | PC Approval | milestone | 0d | 2011-01-18 A | 2011-01-18 A | 24FS+7d | 100% |  | 2011-03-19 | 2011-03-19 | 0d | 2011-01-18 | 2011-01-18 |  |  | start no earlier than 2011-03-19 |
| 70 | E.2.1 | RC Approval | milestone | 0d | 2011-03-21 | 2011-03-21 | 25FS+7d |  |  | 2011-03-21 | 2011-03-21 | 0d | 2011-03-21 | 2011-03-21 | 26.75d | 23.75d | start no earlier than 2011-03-21 |
| 73 | E.2.3 | **(Sedimentation Unit 3)** |  | 6d | 2011-04-04 | 2011-04-10 |  |  |  | 2011-03-14 | 2011-03-21 | 6d | 2011-04-04 | 2011-04-10 | 9.12d |  |  |
| 74 | E.2.3 | Excavation Layout Approval | milestone | 0d | 2011-04-04 | 2011-04-04 | 29FS+7d |  |  | 2011-03-14 | 2011-03-14 | 0d | 2011-04-04 | 2011-04-04 | 9.12d | 6.12d | start no earlier than 2011-03-14 |
| 75 | E.2.3 | PC Approval | milestone | 0d | 2011-04-09 | 2011-04-09 | 30FS+7d |  |  | 2011-03-19 | 2011-03-19 | 0d | 2011-04-09 | 2011-04-09 | 9.12d | 6.12d | start no earlier than 2011-03-19 |
| 76 | E.2.3 | RC Approval | milestone | 0d | 2011-04-10 | 2011-04-10 | 31FS+7d |  |  | 2011-03-21 | 2011-03-21 | 0d | 2011-04-10 | 2011-04-10 | 9.12d | 6.12d | start no earlier than 2011-03-21 |

| ID | WBS | Task | Type | Duration | Start | Finish | Predecessors | Baseline start | Baseline finish | Baseline duration | Baseline 1 start | Baseline 1 finish | Total slack | Free slack | Constraint |
| --- | --- | --- | --- | --- | --- | --- | --- | --- | --- | --- | --- | --- | --- | --- | --- |
| 77 | E.2.10 | **(Tank 10 (Biological Sludge Tank)** |  | 6d | 2011-04-04 | 2011-04-10 |  | 2011-03-14 | 2011-03-21 | 6d | 2011-04-04 | 2011-04-10 | 8.12d |  |  |
| 78 | E.2.10 | Excavation Layout Approval | milestone | 0d | 2011-04-04 | 2011-04-04 | 33FS+7d | 2011-03-14 | 2011-03-14 | 0d | 2011-04-04 | 2011-04-04 | 8.12d | 6.12d | start no earlier than 2011-03-14 |
| 79 | E.2.10 | PC Approval | milestone | 0d | 2011-04-09 | 2011-04-09 | 34FS+7d | 2011-03-19 | 2011-03-19 | 0d | 2011-04-09 | 2011-04-09 | 8.12d | 6.12d | start no earlier than 2011-03-19 |
| 80 | E.2.10 | RC Approval | milestone | 0d | 2011-04-10 | 2011-04-10 | 35FS+7d | 2011-03-21 | 2011-03-21 | 0d | 2011-04-10 | 2011-04-10 | 8.12d | 6.12d | start no earlier than 2011-03-21 |
| 81 | E.2.5 | **Room 5 (Chemical Treatment & Operation Room** |  | 6d | 2011-04-04 | 2011-04-10 |  | 2011-03-14 | 2011-03-21 | 6d | 2011-04-04 | 2011-04-10 | 10.12d |  |  |
| 82 | E.2.5 | Excavation Layout Approval | milestone | 0d | 2011-04-04 | 2011-04-04 | 37FS+7d | 2011-03-14 | 2011-03-14 | 0d | 2011-04-04 | 2011-04-04 | 10.12d | 6.12d | start no earlier than 2011-03-14 |
| 83 | E.2.5 | PC Approval | milestone | 0d | 2011-04-09 | 2011-04-09 | 38FS+7d | 2011-03-19 | 2011-03-19 | 0d | 2011-04-09 | 2011-04-09 | 8.12d | 4.12d | start no earlier than 2011-03-16 |
| 84 | E.2.5 | RC Approval | milestone | 0d | 2011-04-10 | 2011-04-10 | 39FS+7d | 2011-03-21 | 2011-03-21 | 0d | 2011-04-10 | 2011-04-10 | 10.12d | 6.12d | start no earlier than 2011-03-21 |
| 85 | E.2.12 | **Room 12 (Sludge Drying Equipment - Room)** |  | 6d | 2011-04-04 | 2011-04-10 |  | 2011-03-14 | 2011-03-21 | 6d | 2011-04-04 | 2011-04-10 | 9.12d |  |  |
| 86 | E.2.12 | Excavation Layout Approval | milestone | 0d | 2011-04-04 | 2011-04-04 | 41FS+7d | 2011-03-14 | 2011-03-14 | 0d | 2011-04-04 | 2011-04-04 | 9.12d | 6.12d | start no earlier than 2011-03-14 |
| 87 | E.2.12 | PC Approval | milestone | 0d | 2011-04-06 | 2011-04-06 | 42FS+7d | 2011-03-16 | 2011-03-16 | 0d | 2011-04-06 | 2011-04-06 | 9.12d | 6.12d | start no earlier than 2011-03-16 |
| 88 | E.2.12 | RC Approval | milestone | 0d | 2011-04-10 | 2011-04-10 | 43FS+7d | 2011-03-21 | 2011-03-21 | 0d | 2011-04-10 | 2011-04-10 | 9.12d | 6.12d | start no earlier than 2011-03-21 |
| 89 | E.2.14&15 | **Room 14 & 15 (Laboratory-Service & Maitenance Rooms)** |  | 7d | 2011-04-04 | 2011-04-11 |  | 2011-03-14 | 2011-03-22 | 7d | 2011-04-04 | 2011-04-11 | 17.12d |  |  |
| 90 | E.2.14&15 | Excavation Layout Approval | milestone | 0d | 2011-04-04 | 2011-04-04 | 45FS+7d | 2011-03-14 | 2011-03-14 | 0d | 2011-04-04 | 2011-04-04 | 18.12d | 6.12d | start no earlier than 2011-03-14 |
| 91 | E.2.14&15 | PC Approval | milestone | 0d | 2011-04-07 | 2011-04-07 | 46FS+7d | 2011-03-17 | 2011-03-17 | 0d | 2011-04-07 | 2011-04-07 | 17.12d | 5.12d | start no earlier than 2011-03-17 |
| 92 | E.2.14&15 | RC Approval | milestone | 0d | 2011-04-11 | 2011-04-11 | 47FS+7d | 2011-03-22 | 2011-03-22 | 0d | 2011-04-11 | 2011-04-11 | 17.12d | 5.12d | start no earlier than 2011-03-22 |
| 93 | E.2.6 | **Trench** |  | 16d | 2011-04-04 | 2011-04-21 |  | 2011-03-14 | 2011-04-02 | 16d | 2011-04-04 | 2011-04-21 | 9.12d |  |  |
| 94 | E.2.6 | Excavation Layout Approval | milestone | 0d | 2011-04-04 | 2011-04-04 | 49FS+7d | 2011-03-14 | 2011-03-14 | 0d | 2011-04-04 | 2011-04-04 | 9.12d | 6.12d | start no earlier than 2011-03-14 |
| 95 | E.2.6 | PC Approval | milestone | 0d | 2011-04-09 | 2011-04-09 | 50FS+7d | 2011-03-19 | 2011-03-19 | 0d | 2011-04-09 | 2011-04-09 | 9.12d | 6.12d | start no earlier than 2011-03-19 |
| 96 | E.2.6 | RC Approval | milestone | 0d | 2011-04-21 | 2011-04-21 | 51FS+7d | 2011-04-02 | 2011-04-02 | 0d | 2011-04-21 | 2011-04-21 | 9.12d | 6.12d | start no earlier than 2011-04-02 |
| 71 | E.2.D.L | **Disposal Line** |  | 0d | 2011-03-10 | 2011-03-10 |  | 2011-02-16 | 2011-02-16 | 0d | 2011-03-10 | 2011-03-10 | 13.12d |  |  |
| 72 | E.2.D.L | Disposal Line Approval | milestone | 0d | 2011-03-10 | 2011-03-10 | 27FS+7d | 2011-02-16 | 2011-02-16 | 0d | 2011-03-10 | 2011-03-10 | 13.12d | 7d | start no earlier than 2011-02-16 |
| 97 | E.2.L.S | **Hard Scape Around Tanks & Rooms** |  | 0d | 2011-04-20 | 2011-04-20 |  | 2011-03-31 | 2011-03-31 | 0d | 2011-04-20 | 2011-04-20 | 8.12d |  |  |
| 98 | E.2.L.S | Hard Scope Approval | milestone | 0d | 2011-04-20 | 2011-04-20 | 53FS+7d | 2011-03-31 | 2011-03-31 | 0d | 2011-04-20 | 2011-04-20 | 8.12d | 5.12d | start no earlier than 2011-03-31 |

| ID | WBS | Task | Duration | Start | Finish | Predecessors | Complete | Remaining | Baseline start | Baseline finish | Baseline duration | Baseline 1 start | Baseline 1 finish | Total slack | Free slack | Constraint | Resources | Work | Actual work | Cost | Baseline cost |
| --- | --- | --- | --- | --- | --- | --- | --- | --- | --- | --- | --- | --- | --- | --- | --- | --- | --- | --- | --- | --- | --- |
| 99 | C | **Construction** | 134.88d | 2010-12-05 A | 2011-05-25 |  | 20% | 108.52d | 2010-12-05 | 2011-05-02 | 131d | 2010-12-05 | 2011-05-25 | 0d |  |  |  | 14078h | 7445h | 42,537.4 | 61,335 |
| 100 | C.4,6,6',7 | **Tank 4,6,6',7&9 (Biological Treatment & Equilization & Soda-Washing &Physical SludgeTanks)** | 134.88d | 2010-12-05 A | 2011-05-25 |  | 43% | 77.32d | 2010-12-05 | 2011-05-02 | 131d | 2010-12-05 | 2011-05-25 | 0d |  |  |  | 9061h | 7356h | 8,791.2 | 25,840.8 |
| 118 | 4.1.1 | **Tank 9** | 64d | 2011-01-01 A | 2011-04-03 |  | 36% | 40.75d | 2011-01-01 | 2011-03-15 | 65d | 2011-01-01 | 2011-04-03 | 22d |  |  |  |  |  |  |  |
| 119 | 4.1.1.1 | Excavation | 3d | 2011-01-01 A | 2011-01-03 A | 5, 56 | 100% |  | 2011-01-01 | 2011-01-03 | 3d | 2011-01-01 | 2011-01-03 |  |  | start no earlier than 2011-01-01 |  |  |  |  |  |
| 121 | 4.1.1.2 | Compaction & testing for Ex. Level | 2d | 2011-01-04 A | 2011-01-05 A | 119 | 100% |  | 2011-01-04 | 2011-01-05 | 2d | 2011-01-04 | 2011-01-05 |  |  |  |  |  |  |  |  |
| 122 | 4.1.1.3 | Plain Concrete Footing | 3d | 2011-01-06 A | 2011-01-09 A | 121 | 100% |  | 2011-01-06 | 2011-01-09 | 3d | 2011-01-06 | 2011-01-09 |  |  |  |  |  |  |  |  |
| 120 | 4.1.1.4 | Shuttering & Steel Fixing & Inspection & Casting for R.C footing | 3d | 2011-01-03 A | 2011-01-05 A | 122 | 100% |  | 2011-01-10 | 2011-01-20 | 10d | 2011-01-03 | 2011-01-05 |  |  |  |  |  |  |  |  |
| 125 | 4.1.1.5 | 1st Part wall shutering & steel fixing & casting | 19.25d | 2011-01-20 A | 2011-03-03 | 120 | 38% | 12d | 2011-01-22 | 2011-02-12 | 20d | 2011-01-20 | 2011-03-03 | 22d | 0d |  |  |  |  |  |  |
| 123 | 4.1.1.6 | Insulation for Foundation | 2d | 2011-01-06 A | 2011-01-08 A | 120 | 100% |  | 2011-01-22 | 2011-01-24 | 3d | 2011-01-06 | 2011-01-08 |  |  |  |  |  |  |  |  |
| 124 | 4.1.1.7 | Backfilling | 2d | 2011-01-09 A | 2011-01-10 A | 123 | 100% |  | 2011-01-25 | 2011-01-27 | 3d | 2011-01-09 | 2011-01-10 |  |  |  |  |  |  |  |  |
| 126 | 4.1.1.8 | Shuttering Remove for the 1st part | 2d | 2011-03-03 | 2011-03-06 | 125 |  |  | 2011-02-13 | 2011-02-14 | 2d | 2011-03-03 | 2011-03-06 | 22d | 0d |  |  |  |  |  |  |
| 127 | 4.1.1.9 | 2nd Part wall Shutter & Steel with Tie Beams & Slab & Casting | 10d | 2011-03-06 | 2011-03-16 | 126 |  |  | 2011-02-15 | 2011-02-26 | 10d | 2011-03-06 | 2011-03-16 | 22d | 0d |  |  |  |  |  |  |
| 128 | 4.1.1.10 | Preparation for Testing | 3d | 2011-03-17 | 2011-03-20 | 127 |  |  | 2011-02-27 | 2011-03-01 | 3d | 2011-03-17 | 2011-03-20 | 22d | 0d |  |  |  |  |  |  |
| 129 | 4.1.1.11 | Tests for Tank 9( Filling &Testing ) | 10d | 2011-03-20 | 2011-03-31 | 128 |  |  | 2011-03-02 | 2011-03-13 | 10d | 2011-03-20 | 2011-03-31 | 22d | 0d |  |  |  |  |  |  |
| 130 | 4.1.1.12 | External Isolation for Tank 9 | 2d | 2011-03-31 | 2011-04-03 | 129 |  |  | 2011-03-14 | 2011-03-15 | 2d | 2011-03-31 | 2011-04-03 | 22d |  |  |  |  |  |  |  |
| 101 | 4.1.2 | **Tanks 4,6,6',7** | 134.88d | 2010-12-05 A | 2011-05-25 |  | 46% | 73.26d | 2010-12-05 | 2011-05-02 | 131d | 2010-12-05 | 2011-05-25 | 0d |  |  |  | 9061h | 7356h | 8,791.2 | 25,840.8 |
| 102 | C.4,6,6',7 | Excavation | 5d | 2010-12-05 A | 2010-12-09 A | 5, 56 | 100% |  | 2010-12-05 | 2010-12-09 | 5d | 2010-12-05 | 2010-12-09 |  |  | start no earlier than 2010-12-05 |  |  |  |  |  |
| 104 | C.4,6,6',7 | Plain Concrete Footing | 3.12d | 2010-12-12 A | 2010-12-14 A | 103, 57 | 100% |  | 2010-12-12 | 2010-12-14 | 3d | 2010-12-12 | 2010-12-14 |  |  | start no earlier than 2010-12-12 | Plain Concrete [182 cubic meter]; Carpenter [1472%]; Carpenter assistant [1472%] | 736h | 736h |  |  |
| 105 | C.4,6,6',7 | Shuttering & Steel Fixing & Inspection & Casting for R.C footing | 12.5d | 2010-12-15 A | 2010-12-28 A | 104, 58, 6 | 100% |  | 2010-12-15 | 2010-12-28 | 13d | 2010-12-15 | 2010-12-28 |  |  | start no earlier than 2010-12-15 | Carpenter [1326%]; Carpenter assistant [1326%] | 2652h | 2652h |  |  |
| 106 | C.4,6,6',7 | 1st Part wall shutering & steel fixing & casting | 25d | 2010-12-29 A | 2011-01-25 A | 105 | 100% |  | 2010-12-29 | 2011-01-20 | 20d | 2010-12-29 | 2011-01-25 |  |  | start no earlier than 2010-12-28 | Carpenter [473.6%]; Carpenter assistant [473.6%]; Steel Fixer & Assistant [1036.8%] | 3968h | 3968h |  | 17,049.6 |
| 109 | C.4,6,6',7 | Shuttering Remove for the 1st part | 2d | 2011-01-26 A | 2011-01-27 | 106 | 85% | 0.3d | 2011-01-22 | 2011-01-23 | 2d | 2011-01-26 | 2011-01-27 | 3.3d | 0d | start no earlier than 2011-01-15 |  |  |  |  |  |
| 110 | C.4,6,6',7 | 2nd Part wall Shutter & Steel with Tie Beams & Slab & Casting | 11d | 2011-01-27 A | 2011-03-03 | 109FS+1d | 30% | 7.7d | 2011-01-25 | 2011-02-06 | 11d | 2011-01-27 | 2011-03-03 | 0d |  | start no earlier than 2011-01-18 | Carpenter [462.5%]; Carpenter assistant [462.5%]; Steel Fixer & Assistant [1012.5%] | 1705h |  | 8,791.2 | 8,791.2 |
| 103 | C.4,6,6',7 | Compaction & testing for Ex. Level | 2.25d | 2010-12-10 A | 2010-12-12 A | 102 | 100% |  | 2010-12-10 | 2010-12-11 | 2d | 2010-12-10 | 2010-12-12 |  |  | start no earlier than 2010-12-10 |  |  |  |  |  |
| 111 | C.4,6,6',7 | Shuttering Remove for Tank | 10d | 2011-03-03 | 2011-03-14 | 110 |  |  | 2011-02-07 | 2011-02-16 | 10d | 2011-03-03 | 2011-03-14 | 0d |  | start no earlier than 2011-02-06 |  |  |  |  |  |
| 112 | C.4,6,6',7 | Preparation for Testing | 3d | 2011-03-15 | 2011-03-17 | 111 |  |  | 2011-02-17 | 2011-02-20 | 3d | 2011-03-15 | 2011-03-17 | 0d |  | start no earlier than 2011-02-16 |  |  |  |  |  |
| 113 | C.4,6,6',7 | Tests for Tanks 4,6( Filling &Testing ) | 10d | 2011-03-19 | 2011-03-29 | 112 |  |  | 2011-02-21 | 2011-03-03 | 10d | 2011-03-19 | 2011-03-29 | 0d |  | start no earlier than 2011-02-20 |  |  |  |  |  |
| 114 | C.4,6,6',7 | Test for Tanks 6',7 (Filling & Testing) | 10d | 2011-03-29 | 2011-04-10 | 113 |  |  | 2011-03-05 | 2011-03-15 | 10d | 2011-03-29 | 2011-04-10 | 0d |  | start no earlier than 2011-03-03 |  |  |  |  |  |
| 117 | C.4,6,6',7 | Internal Isolation | 25d | 2011-04-27 | 2011-05-25 | 116FS+15d, 115FS+15d, 130 |  |  | 2011-04-04 | 2011-05-02 | 25d | 2011-04-27 | 2011-05-25 | 0d |  | start no earlier than 2011-04-03 |  |  |  |  |  |
| 116 | C.4,6,6',7 | External Isolation for Tanks 6',7 | 2d | 2011-04-09 | 2011-04-10 | 114FS-1d |  |  | 2011-03-15 | 2011-03-16 | 2d | 2011-04-09 | 2011-04-10 | 0d |  | start no earlier than 2011-03-14 |  |  |  |  |  |
| 115 | C.4,6,6',7 | External Isolation for Tanks 4,6 | 2d | 2011-03-29 | 2011-03-31 | 113 |  |  | 2011-03-05 | 2011-03-06 | 2d | 2011-03-29 | 2011-03-31 | 9d |  | start no earlier than 2011-03-03 |  |  |  |  |  |
| 107 | C.4,6,6',7 | Insulation for Foundation | 3d | 2010-12-30 A | 2011-01-02 A | 105FS+1d | 100% |  | 2010-12-30 | 2011-01-02 | 3d | 2010-12-30 | 2011-01-02 |  |  | start no earlier than 2010-12-29 |  |  |  |  |  |
| 108 | C.4,6,6',7 | Backfilling | 3d | 2011-01-03 A | 2011-01-05 A | 107 | 100% |  | 2011-01-03 | 2011-01-05 | 3d | 2011-01-03 | 2011-01-05 |  |  | start no earlier than 2011-01-02 |  |  |  |  |  |

| ID | WBS | Task | Type | Duration | Start | Finish | Predecessors | Complete | Remaining | Baseline start | Baseline finish | Baseline duration | Baseline 1 start | Baseline 1 finish | Total slack | Free slack | Constraint | Resources | Work | Actual work | Cost | Baseline cost |
| --- | --- | --- | --- | --- | --- | --- | --- | --- | --- | --- | --- | --- | --- | --- | --- | --- | --- | --- | --- | --- | --- | --- |
| 131 | C.1',8 | **Tank 1',8 (Pre Treated Influent Feeding & Filterate Water Collecting Pump Pit)** |  | 85d | 2010-12-25 A | 2011-04-19 |  | 37% | 53.13d | 2010-12-25 | 2011-04-12 | 95d | 2010-12-25 | 2011-04-19 | 32.25d |  |  |  | 409h | 57h | 2,246.4 | 3,118.4 |
| 132 | C.1',8 | Excavation |  | 3d | 2010-12-25 A | 2010-12-27 A | 107, 60 | 100% |  | 2010-12-25 | 2010-12-27 | 3d | 2010-12-25 | 2010-12-27 |  |  | start no earlier than 2011-01-02 |  |  |  |  |  |
| 134 | C.1',8 | Plain Concrete Footing |  | 3.12d | 2011-01-06 A | 2011-01-09 A | 133, 61 | 100% |  | 2011-01-06 | 2011-01-09 | 3d | 2011-01-06 | 2011-01-09 |  |  | start no earlier than 2011-01-06 | Plain Concrete [8 cubic meter]; Carpenter [64%]; Carpenter assistant [64%] | 32h | 32h |  | 353.6 |
| 135 | C.1',8 | Shuttering for R.C footing & R.C Steel Fixing & Inspection & Casting |  | 5d | 2011-01-10 A | 2011-01-15 A | 134, 62 | 100% |  | 2011-01-10 | 2011-01-18 | 8d | 2011-01-10 | 2011-01-15 |  |  | start no earlier than 2011-01-10 | Carpenter [37.5%]; Carpenter assistant [25%] | 25h | 25h |  | 518.4 |
| 138 | C.1',8 | Walls shuttering & steel fixing & Inspection & Casting |  | 9d | 2011-01-20 A | 2011-02-20 | 137FS-1d | 30% | 6.3d | 2011-01-29 | 2011-02-07 | 9d | 2011-01-20 | 2011-02-20 | 32.25d | 0d |  | Carpenter [144.4%]; Carpenter assistant [144.4%]; Steel Fixer & Assistant [200%] | 352h |  | 2,246.4 | 2,246.4 |
| 133 | C.1',8 | Compaction & testing for Ex. Level |  | 3d | 2011-01-03 A | 2011-01-05 A | 132 | 100% |  | 2011-01-03 | 2011-01-05 | 3d | 2011-01-03 | 2011-01-05 |  |  | start no earlier than 2011-01-03 |  |  |  |  |  |
| 139 | C.1',8 | Shuttering Remove for Tanks |  | 2d | 2011-02-21 | 2011-02-23 | 138FS+1d |  |  | 2011-02-09 | 2011-02-10 | 2d | 2011-02-21 | 2011-02-23 | 32.25d | 0d | start no earlier than 2011-02-09 |  |  |  |  |  |
| 140 | C.1',8 | Preparation for Testing |  | 3d | 2011-02-22 | 2011-02-26 | 139FS-1d |  |  | 2011-02-11 | 2011-02-13 | 3d | 2011-02-22 | 2011-02-26 | 32.25d | 0d | start no earlier than 2011-02-11 |  |  |  |  |  |
| 141 | C.1',8 | Tests for Tanks 1', 8 ( Filling &Testing ) |  | 7d | 2011-02-24 | 2011-03-05 | 140FS-1d |  |  | 2011-02-14 | 2011-02-21 | 7d | 2011-02-24 | 2011-03-05 | 32.25d | 0d | start no earlier than 2011-02-14 |  |  |  |  |  |
| 143 | C.1',8 | Internal Isolation |  | 15d | 2011-04-03 | 2011-04-19 | 142FS+24d |  |  | 2011-03-27 | 2011-04-12 | 15d | 2011-04-03 | 2011-04-19 | 32.25d |  | start no earlier than 2011-03-27 |  |  |  |  |  |
| 142 | C.1',8 | External Isolation for Tanks 1',8 |  | 3d | 2011-03-03 | 2011-03-06 | 141FS-1d |  |  | 2011-02-22 | 2011-02-24 | 3d | 2011-03-03 | 2011-03-06 | 32.25d | 0d | start no earlier than 2011-02-22 |  |  |  |  |  |
| 136 | C.1',8 | Insullation for Foundation |  | 2.95d | 2011-01-16 A | 2011-01-18 A | 135FS+2d | 100% |  | 2011-01-22 | 2011-01-24 | 3d | 2011-01-16 | 2011-01-18 |  |  | start no earlier than 2011-01-22 |  |  |  |  |  |
| 137 | C.1',8 | Backfilling |  | 2d | 2011-01-19 A | 2011-01-21 A | 136 | 100% |  | 2011-01-25 | 2011-01-27 | 3d | 2011-01-19 | 2011-01-21 |  |  | start no earlier than 2011-01-25 |  |  |  |  |  |
| 144 | C.9' | **Tank 9' (Sand Trap Channel)** |  | 97.5d | 2011-01-10 A | 2011-05-19 |  | 31% | 67.72d | 2011-01-26 | 2011-04-26 | 79d | 2011-01-10 | 2011-05-19 | 5d |  |  |  | 128h | 32h | 518.4 | 1,394.4 |
| 145 | C.9' | Excavation |  | 2d | 2011-01-10 A | 2011-01-11 A | 136FS+1d, 64 | 100% |  | 2011-01-26 | 2011-01-26 | 1d | 2011-01-10 | 2011-01-11 |  |  | start no earlier than 2011-01-26 |  |  |  |  |  |
| 147 | C.9' | Plain Concrete Footing |  | 2.12d | 2011-01-13 A | 2011-01-15 A | 146, 65 | 100% |  | 2011-01-31 | 2011-02-02 | 3d | 2011-01-13 | 2011-01-15 |  |  | start no earlier than 2011-01-31 | Plain Concrete; Carpenter [94.1%]; Carpenter assistant [94.1%] | 32h | 32h |  | 530.4 |
| 149 | C.9' | Shuttering for R.C footing & R.C Steel Fixing & Inspection and Casting | milestone | 0d | 2011-01-17 A | 2011-01-24 A | 147, 66 | 100% |  | 2011-02-03 | 2011-02-11 | 8d | 2011-01-17 | 2011-01-24 |  |  | start no earlier than 2011-02-03 | Carpenter [25%]; Carpenter assistant [25%] |  |  |  | 345.6 |
| 151 | C.9' | Walls shuttering & steel fixing & Inspection & Casting |  | 9d | 2011-02-12 A | 2011-02-28 | 148 | 70% | 2.7d | 2011-02-21 | 2011-03-02 | 9d | 2011-02-12 | 2011-02-28 | 42d | 0d |  | Carpenter [33.3%]; Carpenter assistant [33.3%]; Steel Fixer & Assistant [66.7%] | 96h |  | 518.4 | 518.4 |
| 146 | C.9' | Compaction & testing for Ex. Level |  | 2.15d | 2011-01-11 A | 2011-01-13 A | 145 | 100% |  | 2011-01-27 | 2011-01-30 | 3d | 2011-01-11 | 2011-01-13 |  |  | start no earlier than 2011-01-27 |  |  |  |  |  |
| 152 | C.9' | Shuttering Remove for Tank |  | 2d | 2011-02-28 | 2011-03-02 | 151 |  |  | 2011-03-05 | 2011-03-06 | 2d | 2011-02-28 | 2011-03-02 | 42d | 0d |  |  |  |  |  |  |
| 153 | C.9' | Preparation for Testing |  | 3d | 2011-03-02 | 2011-03-06 | 152 |  |  | 2011-03-07 | 2011-03-09 | 3d | 2011-03-02 | 2011-03-06 | 42d | 0d |  |  |  |  |  |  |
| 154 | C.9' | Tests for Tank 9' ( Filling &Testing ) |  | 7d | 2011-03-06 | 2011-03-13 | 153 |  |  | 2011-03-10 | 2011-03-17 | 7d | 2011-03-06 | 2011-03-13 | 42d | 0d |  |  |  |  |  |  |
| 156 | C.9' | Internal Isolation |  | 20d | 2011-04-27 | 2011-05-19 | 155, 117SS |  |  | 2011-04-04 | 2011-04-26 | 20d | 2011-04-27 | 2011-05-19 | 5d |  |  |  |  |  |  |  |
| 155 | C.9' | External Isolation for Tank 9' |  | 3d | 2011-03-14 | 2011-03-16 | 154 |  |  | 2011-03-19 | 2011-03-21 | 3d | 2011-03-14 | 2011-03-16 | 42d | 37d |  |  |  |  |  |  |
| 150 | C.9' | Insullation for Foundation |  | 3d | 2011-01-25 A | 2011-01-27 A | 149 | 100% |  | 2011-02-14 | 2011-02-16 | 3d | 2011-01-25 | 2011-01-27 |  |  | start no earlier than 2011-02-14 |  |  |  |  |  |
| 148 | C.9' | Backfilling |  | 1d | 2011-01-16 A | 2011-01-16 A | 150 | 100% |  | 2011-02-17 | 2011-02-20 | 3d | 2011-01-16 | 2011-01-16 |  |  | start no earlier than 2011-02-17 |  |  |  |  |  |

| ID | WBS | Task | Duration | Start | Finish | Predecessors | Baseline start | Baseline finish | Baseline duration | Baseline 1 start | Baseline 1 finish | Total slack | Free slack | Constraint | Resources | Work | Cost | Baseline cost |
| --- | --- | --- | --- | --- | --- | --- | --- | --- | --- | --- | --- | --- | --- | --- | --- | --- | --- | --- |
| 179 | C.1 | **Tank1 (Pre-settling Influent Tank)** | 37d | 2011-04-11 | 2011-05-22 |  | 2011-03-17 | 2011-05-01 | 39d | 2011-04-11 | 2011-05-22 | 3d |  |  |  | 568h | 4,157.2 | 4,157.2 |
| 180 | C.1 | Excavation | 2d | 2011-04-11 | 2011-04-12 | 115, 116, 68 | 2011-03-17 | 2011-03-19 | 2d | 2011-04-11 | 2011-04-12 | 3d | 0d | start no earlier than 2011-03-16 |  |  |  |  |
| 182 | C.1 | Plain Concrete Footing | 2d | 2011-04-16 | 2011-04-17 | 181, 69 | 2011-03-22 | 2011-03-23 | 2d | 2011-04-16 | 2011-04-17 | 3d | 0d | start no earlier than 2011-03-21 | Plain Concrete [10 cubic meter]; Carpenter; Carpenter assistant | 32h | 355.6 | 355.6 |
| 183 | C.1 | Shuttering for R.C footing & R.C Steel Fixing & Inspection & Casting | 6d | 2011-04-17 | 2011-04-24 | 182, 70 | 2011-03-24 | 2011-03-30 | 6d | 2011-04-17 | 2011-04-24 | 3d | 0d | start no earlier than 2011-03-23 | Carpenter [166.7%]; Carpenter assistant [166.7%] | 160h | 1,728 | 1,728 |
| 186 | C.1 | Walls shuttering & steel fixing & Inspection & Casting | 7d | 2011-04-28 | 2011-05-07 | 185 | 2011-04-06 | 2011-04-13 | 7d | 2011-04-28 | 2011-05-07 | 3d | 0d | start no earlier than 2011-04-06 | Carpenter [171.4%]; Carpenter assistant [171.4%]; Steel Fixer & Assistant [328.6%] | 376h | 2,073.6 | 2,073.6 |
| 181 | C.1 | Compaction & testing for Ex. Level | 2d | 2011-04-13 | 2011-04-14 | 180 | 2011-03-20 | 2011-03-21 | 2d | 2011-04-13 | 2011-04-14 | 3d | 0d | start no earlier than 2011-03-19 |  |  |  |  |
| 187 | C.1 | Shuttering Remove for Tank | 2d | 2011-05-07 | 2011-05-08 | 186 | 2011-04-16 | 2011-04-17 | 2d | 2011-05-07 | 2011-05-08 | 3d | 0d | start no earlier than 2011-04-16 |  |  |  |  |
| 188 | C.1 | Preparation for Testing | 1d | 2011-05-09 | 2011-05-09 | 187 | 2011-04-18 | 2011-04-18 | 1d | 2011-05-09 | 2011-05-09 | 3d | 0d | start no earlier than 2011-04-18 |  |  |  |  |
| 189 | C.1 | Tests for Tank 1 ( Filling &Testing ) | 7d | 2011-05-10 | 2011-05-17 | 188 | 2011-04-19 | 2011-04-26 | 7d | 2011-05-10 | 2011-05-17 | 3d | 0d | start no earlier than 2011-04-19 |  |  |  |  |
| 191 | C.1 | Internal Isolation | 2d | 2011-05-19 | 2011-05-22 | 190, 117SS | 2011-04-30 | 2011-05-01 | 2d | 2011-05-19 | 2011-05-22 | 3d |  | start no earlier than 2011-04-30 |  |  |  |  |
| 190 | C.1 | External Isolation for Tank 1 | 2d | 2011-05-17 | 2011-05-19 | 189 | 2011-04-27 | 2011-04-28 | 2d | 2011-05-17 | 2011-05-19 | 3d | 0d | start no earlier than 2011-04-27 |  |  |  |  |
| 184 | C.1 | Isolation for Foundation | 2d | 2011-04-24 | 2011-04-26 | 183 | 2011-04-02 | 2011-04-03 | 2d | 2011-04-24 | 2011-04-26 | 3d | 0d | start no earlier than 2011-04-02 |  |  |  |  |
| 185 | C.1 | Backfilling | 2d | 2011-04-26 | 2011-04-28 | 184 | 2011-04-04 | 2011-04-05 | 2d | 2011-04-26 | 2011-04-28 | 3d | 0d | start no earlier than 2011-04-04 |  |  |  |  |
| 192 | C.3 | **(Sedimentation Unit 3)** | 37d | 2011-04-11 | 2011-05-22 |  | 2011-03-17 | 2011-05-01 | 39d | 2011-04-11 | 2011-05-22 | 3d |  |  |  | 144h | 1,219.6 | 1,219.6 |
| 193 | C.3 | Excavation | 2d | 2011-04-11 | 2011-04-12 | 115, 116, 74 | 2011-03-17 | 2011-03-19 | 2d | 2011-04-11 | 2011-04-12 | 3d | 0d | start no earlier than 2011-03-16 |  |  |  |  |
| 195 | C.3 | Plain Concrete Footing | 2d | 2011-04-16 | 2011-04-17 | 194, 75 | 2011-03-22 | 2011-03-23 | 2d | 2011-04-16 | 2011-04-17 | 3d | 0d | start no earlier than 2011-03-21 | Plain Concrete [10 cubic meter]; Carpenter; Carpenter assistant | 32h | 355.6 | 355.6 |
| 196 | C.3 | Shuttering for R.C footing & R.C Steel Fixing & Inspection & Casting | 6d | 2011-04-17 | 2011-04-24 | 195, 76 | 2011-03-24 | 2011-03-30 | 6d | 2011-04-17 | 2011-04-24 | 3d | 0d | start no earlier than 2011-03-23 | Carpenter [50%]; Carpenter assistant [50%] | 48h | 518.4 | 518.4 |
| 199 | C.3 | Walls shutering & steel fixing & Inspection & Casting | 7d | 2011-04-28 | 2011-05-07 | 198 | 2011-04-06 | 2011-04-13 | 7d | 2011-04-28 | 2011-05-07 | 3d | 0d | start no earlier than 2011-04-06 | Carpenter [28.6%]; Carpenter assistant [28.6%]; Steel Fixer & Assistant [57.1%] | 64h | 345.6 | 345.6 |
| 194 | C.3 | Compaction & testing for Ex. Level | 2d | 2011-04-13 | 2011-04-14 | 193 | 2011-03-20 | 2011-03-21 | 2d | 2011-04-13 | 2011-04-14 | 3d | 0d | start no earlier than 2011-03-19 |  |  |  |  |
| 200 | C.3 | Shuttering Remove for Unit 3 | 2d | 2011-05-07 | 2011-05-08 | 199 | 2011-04-16 | 2011-04-17 | 2d | 2011-05-07 | 2011-05-08 | 3d | 0d | start no earlier than 2011-04-16 |  |  |  |  |
| 201 | C.3 | Preparation for Testing | 1d | 2011-05-09 | 2011-05-09 | 200 | 2011-04-18 | 2011-04-18 | 1d | 2011-05-09 | 2011-05-09 | 3d | 0d | start no earlier than 2011-04-18 |  |  |  |  |
| 202 | C.3 | Tests for Unit 3 ( Filling &Testing ) | 7d | 2011-05-10 | 2011-05-17 | 201 | 2011-04-19 | 2011-04-26 | 7d | 2011-05-10 | 2011-05-17 | 3d | 0d | start no earlier than 2011-04-19 |  |  |  |  |
| 204 | C.3 | Internal Isolation | 2d | 2011-05-19 | 2011-05-22 | 203 | 2011-04-30 | 2011-05-01 | 2d | 2011-05-19 | 2011-05-22 | 3d |  | start no earlier than 2011-04-30 |  |  |  |  |
| 203 | C.3 | External Isolation for Unit 3 | 2d | 2011-05-17 | 2011-05-19 | 202 | 2011-04-27 | 2011-04-28 | 2d | 2011-05-17 | 2011-05-19 | 3d | 0d | start no earlier than 2011-04-27 |  |  |  |  |
| 197 | C.3 | Insullation for Foundation | 2d | 2011-04-24 | 2011-04-26 | 196 | 2011-04-02 | 2011-04-03 | 2d | 2011-04-24 | 2011-04-26 | 3d | 0d | start no earlier than 2011-04-02 |  |  |  |  |
| 198 | C.3 | Backfilling | 2d | 2011-04-26 | 2011-04-28 | 197 | 2011-04-04 | 2011-04-05 | 2d | 2011-04-26 | 2011-04-28 | 3d | 0d | start no earlier than 2011-04-04 |  |  |  |  |

| ID | WBS | Task | Duration | Start | Finish | Predecessors | Baseline start | Baseline finish | Baseline duration | Baseline 1 start | Baseline 1 finish | Total slack | Free slack | Constraint | Resources | Work | Cost | Baseline cost |
| --- | --- | --- | --- | --- | --- | --- | --- | --- | --- | --- | --- | --- | --- | --- | --- | --- | --- | --- |
| 205 | C.10 | **(Tank 10 (Biological Sludge Tank)** | 38d | 2011-04-11 | 2011-05-23 |  | 2011-03-17 | 2011-05-01 | 39d | 2011-04-11 | 2011-05-23 | 2d |  |  |  | 1408h | 9,012.6 | 9,012.6 |
| 206 | C.10 | Excavation | 2d | 2011-04-11 | 2011-04-12 | 115, 116, 78 | 2011-03-17 | 2011-03-19 | 2d | 2011-04-11 | 2011-04-12 | 2d | 0d | start no earlier than 2011-03-16 |  |  |  |  |
| 208 | C.10 | Plain Concrete Footing | 2d | 2011-04-16 | 2011-04-17 | 207, 79 | 2011-03-22 | 2011-03-23 | 2d | 2011-04-16 | 2011-04-17 | 2d | 0d | start no earlier than 2011-03-21 | Plain Concrete [27 cubic meter]; Carpenter [350%]; Carpenter assistant [350%] | 112h | 1,236.6 | 1,236.6 |
| 209 | C.10 | Shuttering for R.C footing & R.C Steel Fixing & Inspection & Casting | 5d | 2011-04-17 | 2011-04-23 | 208, 80 | 2011-03-24 | 2011-03-29 | 5d | 2011-04-17 | 2011-04-23 | 2d | 0d | start no earlier than 2011-03-23 | Carpenter [260%]; Carpenter assistant [260%] | 208h | 2,246.4 | 2,246.4 |
| 212 | C.10 | 1st Part wall shutering & steel fixing & Inspection & Casting | 4d | 2011-04-27 | 2011-05-02 | 211 | 2011-04-05 | 2011-04-09 | 4d | 2011-04-27 | 2011-05-02 | 2d | 0d | start no earlier than 2011-04-05 | Carpenter [400%]; Carpenter assistant [400%]; Steel Fixer & Assistant [900%] | 544h | 2,764.8 | 2,764.8 |
| 213 | C.10 | Shuttering Remove | 1d | 2011-05-02 | 2011-05-03 | 212 | 2011-04-10 | 2011-04-10 | 1d | 2011-05-02 | 2011-05-03 | 2d | 0d | start no earlier than 2011-04-10 |  |  |  |  |
| 207 | C.10 | Compaction & testing for Ex. Level | 2d | 2011-04-13 | 2011-04-14 | 206 | 2011-03-20 | 2011-03-21 | 2d | 2011-04-13 | 2011-04-14 | 2d | 0d | start no earlier than 2011-03-19 |  |  |  |  |
| 216 | C.10 | Preparation for Testing | 1d | 2011-05-10 | 2011-05-10 | 215 | 2011-04-18 | 2011-04-18 | 1d | 2011-05-10 | 2011-05-10 | 2d | 0d | start no earlier than 2011-04-18 |  |  |  |  |
| 217 | C.10 | Tests for Tank 10 | 7d | 2011-05-11 | 2011-05-18 | 216 | 2011-04-19 | 2011-04-26 | 7d | 2011-05-11 | 2011-05-18 | 2d | 0d | start no earlier than 2011-04-19 |  |  |  |  |
| 219 | C.10 | Internal Isolation | 2d | 2011-05-21 | 2011-05-23 | 218 | 2011-04-30 | 2011-05-01 | 2d | 2011-05-21 | 2011-05-23 | 2d |  | start no earlier than 2011-04-30 |  |  |  |  |
| 218 | C.10 | External Isolation for Tank 10 | 2d | 2011-05-18 | 2011-05-21 | 217 | 2011-04-27 | 2011-04-28 | 2d | 2011-05-18 | 2011-05-21 | 2d | 0d | start no earlier than 2011-04-27 |  |  |  |  |
| 210 | C.10 | Insullation for Foundation | 2d | 2011-04-23 | 2011-04-25 | 209 | 2011-03-31 | 2011-04-02 | 2d | 2011-04-23 | 2011-04-25 | 2d | 0d | start no earlier than 2011-03-31 |  |  |  |  |
| 211 | C.10 | Backfilling | 2d | 2011-04-25 | 2011-04-27 | 210 | 2011-04-03 | 2011-04-04 | 2d | 2011-04-25 | 2011-04-27 | 2d | 0d | start no earlier than 2011-04-03 |  |  |  |  |
| 214 | C.10 | 2nd Part wall Shuttering & steel fixing &Inspection & Casting | 5d | 2011-05-03 | 2011-05-08 | 213 | 2011-04-11 | 2011-04-16 | 5d | 2011-05-03 | 2011-05-08 | 2d | 0d | start no earlier than 2011-04-11 | Carpenter [320%]; Carpenter assistant [320%]; Steel Fixer & Assistant [720%] | 544h | 2,764.8 | 2,764.8 |
| 215 | C.10 | Shuttering Remove for Tank | 1d | 2011-05-09 | 2011-05-09 | 214 | 2011-04-17 | 2011-04-17 | 1d | 2011-05-09 | 2011-05-09 | 2d | 0d | start no earlier than 2011-04-17 |  |  |  |  |
| 220 | C.5 | **Room 5 (Chemical Treatment & Operation Room** | 28d | 2011-04-11 | 2011-05-11 |  | 2011-03-17 | 2011-04-25 | 34d | 2011-04-11 | 2011-05-11 | 4d |  |  |  | 1392h | 9,782.8 | 9,782.8 |
| 221 | C.5 | Excavation | 2d | 2011-04-11 | 2011-04-12 | 115, 116, 82 | 2011-03-17 | 2011-03-19 | 2d | 2011-04-11 | 2011-04-12 | 4d | 0d | start no earlier than 2011-03-16 |  |  |  |  |
| 222 | C.5 | Foundation | 4d | 2011-04-13 | 2011-04-17 | 221, 83 | 2011-03-20 | 2011-03-23 | 4d | 2011-04-13 | 2011-04-17 | 4d | 0d | start no earlier than 2011-03-19 | Plain Concrete [32 cubic meter]; Reinforced Concrete [34 cubic meter]; Carpenter [475%]; Carpenter assistant [475%]; Steel Fixer & Assistant [625%] | 504h | 3,349.2 | 3,349.2 |
| 223 | C.5 | Columns & Slabs | 7d | 2011-04-17 | 2011-04-25 | 222, 84 | 2011-03-24 | 2011-03-31 | 7d | 2011-04-17 | 2011-04-25 | 4d | 0d | start no earlier than 2011-03-23 | Steel Fixer & Assistant [528.6%]; Carpenter assistant [528.6%]; Carpenter [528.6%]; Reinforced Concrete [40 cubic meter] | 888h | 6,433.6 | 6,433.6 |
| 224 | C.5 | Finishing & Electrical Works | 15d | 2011-04-25 | 2011-05-11 | 223 | 2011-04-09 | 2011-04-25 | 15d | 2011-04-25 | 2011-05-11 | 12d |  | start no earlier than 2011-04-09 |  |  |  |  |
| 225 | C.12 | **Room 12 (Sludge Drying Equipment - Room)** | 29d | 2011-04-11 | 2011-05-12 |  | 2011-03-17 | 2011-04-26 | 35d | 2011-04-11 | 2011-05-12 | 3d |  |  |  | 784h | 5,589.1 | 5,589.1 |
| 226 | C.12 | Excavation | 2d | 2011-04-11 | 2011-04-12 | 115, 116, 86 | 2011-03-17 | 2011-03-19 | 2d | 2011-04-11 | 2011-04-12 | 3d | 0d | start no earlier than 2011-03-16 |  |  |  |  |
| 227 | C.12 | Foundation | 4d | 2011-04-13 | 2011-04-17 | 226, 87 | 2011-03-20 | 2011-03-23 | 4d | 2011-04-13 | 2011-04-17 | 3d | 0d | start no earlier than 2011-03-19 | Plain Concrete [19 cubic meter]; Reinforced Concrete [17.5 cubic meter]; Carpenter [275%]; Carpenter assistant [275%]; Steel Fixer & Assistant [325%] | 280h | 1,937.3 | 1,937.3 |
| 228 | C.12 | Columns & Slabs | 8d | 2011-04-17 | 2011-04-26 | 227, 88 | 2011-03-24 | 2011-04-02 | 8d | 2011-04-17 | 2011-04-26 | 3d | 0d | start no earlier than 2011-03-23 | Steel Fixer & Assistant [262.5%]; Carpenter assistant [262.5%]; Carpenter [262.5%]; Reinforced Concrete [23 cubic meter] | 504h | 3,651.8 | 3,651.8 |
| 229 | C.12 | Finishing & Electrical Works | 15d | 2011-04-26 | 2011-05-12 | 228 | 2011-04-10 | 2011-04-26 | 15d | 2011-04-26 | 2011-05-12 | 11d |  | start no earlier than 2011-04-10 |  |  |  |  |

| ID | WBS | Task | Duration | Start | Finish | Predecessors | Baseline start | Baseline finish | Baseline duration | Baseline 1 start | Baseline 1 finish | Total slack | Free slack | Constraint | Resources | Work | Cost | Baseline cost |
| --- | --- | --- | --- | --- | --- | --- | --- | --- | --- | --- | --- | --- | --- | --- | --- | --- | --- | --- |
| 230 | C.14&15 | **Room 14 & 15 (Laboratory-Service & Maitenance Rooms)** | 28d | 2011-04-11 | 2011-05-11 |  | 2011-03-17 | 2011-04-25 | 34d | 2011-04-11 | 2011-05-11 | 12d |  |  |  | 184h | 1,220.1 | 1,220.1 |
| 231 | C.14&15 | Excavation | 2d | 2011-04-11 | 2011-04-12 | 115, 116, 90 | 2011-03-17 | 2011-03-19 | 2d | 2011-04-11 | 2011-04-12 | 12d | 0d | start no earlier than 2011-03-16 |  |  |  |  |
| 232 | C.14&15 | Foundation | 4d | 2011-04-13 | 2011-04-17 | 231, 91 | 2011-03-20 | 2011-03-23 | 4d | 2011-04-13 | 2011-04-17 | 12d | 0d | start no earlier than 2011-03-19 | Plain Concrete [1.5 cubic meter]; Reinforced Concrete [4 cubic meter]; Carpenter [50%]; Carpenter assistant [50%]; Steel Fixer & Assistant [75%] | 56h | 351.1 | 351.1 |
| 233 | C.14&15 | Columns & Slabs | 7d | 2011-04-17 | 2011-04-25 | 232, 92 | 2011-03-24 | 2011-03-31 | 7d | 2011-04-17 | 2011-04-25 | 12d | 0d | start no earlier than 2011-03-23 | Steel Fixer & Assistant [85.7%]; Carpenter assistant [71.4%]; Carpenter [71.4%]; Reinforced Concrete [5 cubic meter] | 128h | 869 | 869 |
| 234 | C.14&15 | Finishing & Electrical Works | 15d | 2011-04-25 | 2011-05-11 | 233 | 2011-04-09 | 2011-04-25 | 15d | 2011-04-25 | 2011-05-11 | 12d |  | start no earlier than 2011-04-09 |  |  |  |  |
| 235 | C.6 | **Trench** | 37d | 2011-04-11 | 2011-05-22 |  | 2011-03-17 | 2011-04-28 | 37d | 2011-04-11 | 2011-05-22 | 3d |  |  |  |  |  |  |
| 236 | C.6 | Excavation | 4d | 2011-04-11 | 2011-04-14 | 115, 116, 94 | 2011-03-17 | 2011-03-21 | 4d | 2011-04-11 | 2011-04-14 | 3d | 0d | start no earlier than 2011-03-16 |  |  |  |  |
| 237 | C.6 | Foundation | 12d | 2011-04-16 | 2011-04-28 | 236, 95 | 2011-03-22 | 2011-04-04 | 12d | 2011-04-16 | 2011-04-28 | 3d | 0d | start no earlier than 2011-03-21 |  |  |  |  |
| 238 | C.6 | R.C Walls | 17d | 2011-04-28 | 2011-05-17 | 237, 241FF-1d, 96 | 2011-04-05 | 2011-04-24 | 17d | 2011-04-28 | 2011-05-17 | 3d | 0d | start no earlier than 2011-04-04 |  |  |  |  |
| 239 | C.6 | Installing steel Cover | 4d | 2011-05-17 | 2011-05-22 | 238 | 2011-04-25 | 2011-04-28 | 4d | 2011-05-17 | 2011-05-22 | 3d |  | start no earlier than 2011-04-24 |  |  |  |  |
| 157 | C.D.L | **Disposal Line** | 55d | 2011-03-17 | 2011-05-18 |  | 2011-02-26 | 2011-04-30 | 55d | 2011-03-17 | 2011-05-18 | 6.12d |  |  |  |  |  |  |
| 158 | 4.11.1 | **مرحلة اولى** | 19d | 2011-03-17 | 2011-04-09 |  | 2011-02-26 | 2011-03-19 | 19d | 2011-03-17 | 2011-04-09 | 6.12d |  |  |  |  |  |  |
| 159 | 4.11.1.1 | حفر | 4d | 2011-03-17 | 2011-03-22 | 2FS+80d, 72 | 2011-02-26 | 2011-03-01 | 4d | 2011-03-17 | 2011-03-22 | 6.12d | 0d |  |  |  |  |  |
| 160 | 4.11.1.2 | تركيب مواسير | 5d | 2011-03-22 | 2011-03-28 | 159 | 2011-03-02 | 2011-03-07 | 5d | 2011-03-22 | 2011-03-28 | 6.12d | 0d |  |  |  |  |  |
| 161 | 4.11.1.3 | صب حطة اولى | 2d | 2011-03-28 | 2011-03-30 | 160 | 2011-03-08 | 2011-03-09 | 2d | 2011-03-28 | 2011-03-30 | 6.12d | 0d |  |  |  |  |  |
| 162 | 4.11.1.4 | صب حطة ثانية | 2d | 2011-03-30 | 2011-04-02 | 161 | 2011-03-10 | 2011-03-12 | 2d | 2011-03-30 | 2011-04-02 | 6.12d | 0d |  |  |  |  |  |
| 163 | 4.11.1.5 | إختبار | 3d | 2011-04-02 | 2011-04-05 | 162 | 2011-03-13 | 2011-03-15 | 3d | 2011-04-02 | 2011-04-05 | 6.12d | 0d |  |  |  |  |  |
| 164 | 4.11.1.6 | ردم | 3d | 2011-04-05 | 2011-04-09 | 163 | 2011-03-16 | 2011-03-19 | 3d | 2011-04-05 | 2011-04-09 | 6.12d | 0d |  |  |  |  |  |
| 165 | 4.11.2 | **مرحلة ثانية** | 18d | 2011-04-09 | 2011-04-28 |  | 2011-03-20 | 2011-04-09 | 18d | 2011-04-09 | 2011-04-28 | 6.12d |  |  |  |  |  |  |
| 166 | 4.11.2.1 | حفر | 3d | 2011-04-09 | 2011-04-11 | 164 | 2011-03-20 | 2011-03-22 | 3d | 2011-04-09 | 2011-04-11 | 6.12d | 0d |  |  |  |  |  |
| 167 | 4.11.2.2 | تركيب مواسير | 5d | 2011-04-11 | 2011-04-17 | 166 | 2011-03-23 | 2011-03-28 | 5d | 2011-04-11 | 2011-04-17 | 6.12d | 0d |  |  |  |  |  |
| 168 | 4.11.2.3 | صب حطة اولى | 2d | 2011-04-17 | 2011-04-19 | 167 | 2011-03-29 | 2011-03-30 | 2d | 2011-04-17 | 2011-04-19 | 6.12d | 0d |  |  |  |  |  |
| 169 | 4.11.2.4 | صب حطة ثانية | 2d | 2011-04-19 | 2011-04-21 | 168 | 2011-03-31 | 2011-04-02 | 2d | 2011-04-19 | 2011-04-21 | 6.12d | 0d |  |  |  |  |  |
| 170 | 4.11.2.5 | إختبار | 3d | 2011-04-21 | 2011-04-25 | 169 | 2011-04-03 | 2011-04-05 | 3d | 2011-04-21 | 2011-04-25 | 6.12d | 0d |  |  |  |  |  |
| 171 | 4.11.2.6 | ردم | 3d | 2011-04-25 | 2011-04-28 | 170 | 2011-04-06 | 2011-04-09 | 3d | 2011-04-25 | 2011-04-28 | 6.12d | 0d |  |  |  |  |  |

| ID | WBS | Task | Duration | Start | Finish | Predecessors | Baseline start | Baseline finish | Baseline duration | Baseline 1 start | Baseline 1 finish | Total slack | Free slack | Constraint |
| --- | --- | --- | --- | --- | --- | --- | --- | --- | --- | --- | --- | --- | --- | --- |
| 172 | 4.11.3 | **مرحلة ثالثة** | 18d | 2011-04-28 | 2011-05-18 |  | 2011-04-10 | 2011-04-30 | 18d | 2011-04-28 | 2011-05-18 | 6.12d |  |  |
| 173 | 4.11.3.1 | حفر | 3d | 2011-04-28 | 2011-05-02 | 171 | 2011-04-10 | 2011-04-12 | 3d | 2011-04-28 | 2011-05-02 | 6.12d | 0d |  |
| 174 | 4.11.3.2 | تركيب مواسير | 5d | 2011-05-02 | 2011-05-07 | 173 | 2011-04-13 | 2011-04-18 | 5d | 2011-05-02 | 2011-05-07 | 6.12d | 0d |  |
| 175 | 4.11.3.3 | صب حطة اولى | 2d | 2011-05-08 | 2011-05-09 | 174 | 2011-04-19 | 2011-04-20 | 2d | 2011-05-08 | 2011-05-09 | 6.12d | 0d |  |
| 176 | 4.11.3.4 | صب حطة ثانية | 2d | 2011-05-09 | 2011-05-11 | 175 | 2011-04-21 | 2011-04-23 | 2d | 2011-05-09 | 2011-05-11 | 6.12d | 0d |  |
| 177 | 4.11.3.5 | إختبار | 3d | 2011-05-11 | 2011-05-15 | 176 | 2011-04-24 | 2011-04-26 | 3d | 2011-05-11 | 2011-05-15 | 6.12d | 0d |  |
| 178 | 4.11.3.6 | ردم | 3d | 2011-05-15 | 2011-05-18 | 177 | 2011-04-27 | 2011-04-30 | 3d | 2011-05-15 | 2011-05-18 | 6.12d |  |  |
| 240 | C.L.S | **Hard Scape Around Tanks & Rooms** | 20d | 2011-04-26 | 2011-05-18 |  | 2011-04-03 | 2011-04-25 | 20d | 2011-04-26 | 2011-05-18 | 3d |  |  |
| 241 | C.L.S | Hard Scape Around Tanks & Rooms | 20d | 2011-04-26 | 2011-05-18 | 223, 228, 98, 108, 124 | 2011-04-03 | 2011-04-25 | 20d | 2011-04-26 | 2011-05-18 | 3d | 0d | start no earlier than 2011-04-02 |
