# Dabur Architecture tender schedule

Schedule from MS Project, 2011-05-10 to 2011-12-31, status date 2011-09-23, costs in ج.م.‏, A marks actual dates.

## Calendars

- Dabur Architecture work: Mon-Thu 08:00-16:00; Fri off; Sat-Sun 08:00-16:00. Exceptions (off unless hours are given): 2011-08-30 to 2011-09-04 (Eid Elfetr), 2011-11-05 to 2011-11-11 (Eid Eladha).

## Resources

| Resource |
| --- |
| Painter |
| Tiler |
| Miscelaneous Labor |
| Plaster |

## Schedule

| ID | WBS | Task | Type | Duration | Start | Finish | Predecessors | Complete | Remaining | Total slack | Free slack | Constraint | Work | Actual work | Cost | Actual cost | Text2 | Text3 | Building |
| --- | --- | --- | --- | --- | --- | --- | --- | --- | --- | --- | --- | --- | --- | --- | --- | --- | --- | --- | --- |
| 1 | 1 | **Dabur Green Field project Architecture work** |  | 190.5d | 2011-05-10 A | 2011-12-31 |  | 9% | 173.88d | 0d |  |  | 77097.5h | 3253.71h | 9,105,785 | 151,570 | ܁$ | ܁% |  |
| 2 | 1.1 | **Key Dates** |  | 186.5d | 2011-05-15 A | 2011-12-31 |  | 99% | 0d | 0d |  |  |  |  |  |  | ܁$ | ܁% |  |
| 3 | 1.1.1 | Letter of Acceptance | milestone | 0d | 2011-09-23 | 2011-09-23 |  |  |  | 0d |  | start no earlier than 2011-09-23 |  |  |  |  | ܁$ | ܁% |  |
| 4 | 1.1.2 | Receive Issue for construction drawings |  | 1d | 2011-05-15 A | 2011-05-15 A |  | 100% |  |  |  | start no earlier than 2011-09-23 |  |  |  |  | ܁$ | ܁% |  |
| 5 | 1.1.3 | Start Architecture work |  | 1d | 2011-07-07 A | 2011-07-07 A | 3, 4 | 100% |  |  |  | start no earlier than 2011-09-23 |  |  |  |  | ܁$ | ܁% |  |
| 6 | 1.1.4 | Finish Architecture Work | milestone | 0d | 2011-12-31 | 2011-12-31 | 55, 72, 74, 294, 90, 104, 105, 103, 106, 117, 121, 118, 120, 129, 144, 161, 171, 172, 175, 182, 190, 189, 199, 197, 205, 206, 207, 215, 214, 231, 222, 235, 253, 254, 255, 247, 241, 264, 265, 271, 277, 282, 228, 71, 102, 119, 159, 174, 252, 263, 198, 56, 73, 212, 211, 213, 194, 195, 86, 137, 89 |  |  | 0d |  |  |  |  |  |  | ܁$ | ܁% |  |
| 7 | 1.1.5 | Finish stage 1 second&facades | milestone | 0d | 2011-11-12 | 2011-11-12 | 302, 301, 299, 300, 298 |  |  | 0d |  |  |  |  |  |  |  |  |  |
| 8 | 1.2 | **Engineering** |  | 75d | 2011-07-07 A | 2011-10-08 |  | 76% | 17.95d | 35.5d |  |  |  |  |  |  | ܁$ | ܁% | ܁' |
| 9 | 1.2.1 | **Production Building** |  | 75d | 2011-07-07 A | 2011-10-08 |  | 76% | 17.95d | 35.5d |  |  |  |  |  |  | ܁$ | ܁% | ܁' |
| 10 | 1.2.1.1 | **Flooring** |  | 65d | 2011-07-07 A | 2011-09-26 |  | 79% | 13.93d | 14d |  |  |  |  |  |  | ܁$ | ܁% | ܁' |
| 11 | 1.2.1.1.1 | Shop Drawings Preparation |  | 7d | 2011-07-07 A | 2011-07-14 A | 4FS+55d | 100% |  |  |  |  |  |  |  |  | ܁$ | ܁% | ܁' |
| 12 | 1.2.1.1.2 | Shop Drawings submittal |  | 4d | 2011-07-14 A | 2011-07-18 A | 11 | 100% |  |  |  |  |  |  |  |  | ܁$ | ܁% | ܁' |
| 13 | 1.2.1.1.3 | Shop Drawings Approval |  | 3d | 2011-09-24 | 2011-09-26 | 12SS+3d |  |  | 14d | 0d | start no earlier than 2011-09-23 |  |  |  |  | ܁$ | ܁% | ܁' |
| 14 | 1.2.1.2 | **Metal Doors** |  | 56d | 2011-07-18 A | 2011-09-26 |  | 90% | 5.42d | 0d |  |  |  |  |  |  | ܁$ | ܁% | ܁' |
| 15 | 1.2.1.2.1 | Shop Drawings Preparation |  | 8d | 2011-07-18 A | 2011-07-26 A | 4FS+59d | 100% |  |  |  |  |  |  |  |  | ܁$ | ܁% | ܁' |
| 16 | 1.2.1.2.2 | Shop Drawings submittal |  | 20d | 2011-07-26 A | 2011-08-17 A | 15 | 100% |  |  |  |  |  |  |  |  | ܁$ | ܁% | ܁' |
| 17 | 1.2.1.2.3 | Shop Drawings Approval |  | 3d | 2011-09-24 | 2011-09-26 | 16SS+3d |  |  | 0d |  | start no earlier than 2011-09-23 |  |  |  |  | ܁$ | ܁% | ܁' |
| 18 | 1.2.1.3 | **False ceiling** |  | 64d | 2011-07-08 A | 2011-09-26 |  | 75% | 16d | 0d |  |  |  |  |  |  | ܁$ | ܁% | ܁' |
| 19 | 1.2.1.3.1 | Shop Drawings Preparation |  | 6d | 2011-07-08 A | 2011-07-15 A | 4FS+55d | 100% |  |  |  |  |  |  |  |  | ܁$ | ܁% | ܁' |
| 20 | 1.2.1.3.2 | Shop Drawings submittal |  | 3d | 2011-07-15 A | 2011-07-18 A | 19 | 100% |  |  |  |  |  |  |  |  | ܁$ | ܁% | ܁' |
| 21 | 1.2.1.3.3 | Shop Drawings Approval |  | 3d | 2011-09-24 | 2011-09-26 | 20SS+3d |  |  | 0d |  | start no earlier than 2011-09-23 |  |  |  |  | ܁$ | ܁% | ܁' |
| 22 | 1.2.1.4 | **Indoors partitions** |  | 60d | 2011-07-13 A | 2011-09-26 |  | 83% | 10d | 0d |  |  |  |  |  |  | ܁$ | ܁% | ܁' |
| 23 | 1.2.1.4.1 | Shop Drawings Preparation |  | 8d | 2011-07-13 A | 2011-07-21 A | 4FS+55d | 100% |  |  |  |  |  |  |  |  | ܁$ | ܁% | ܁' |
| 24 | 1.2.1.4.2 | Shop Drawings submittal |  | 7d | 2011-07-21 A | 2011-07-28 A | 23 | 100% |  |  |  |  |  |  |  |  | ܁$ | ܁% | ܁' |
| 25 | 1.2.1.4.3 | Shop Drawings Approval |  | 3d | 2011-09-24 | 2011-09-26 | 24SS+3d |  |  | 0d |  | start no earlier than 2011-09-23 |  |  |  |  | ܁$ | ܁% | ܁' |

| ID | WBS | Task | Duration | Start | Finish | Predecessors | Complete | Remaining | Total slack | Free slack | Constraint | Resources | Work | Actual work | Cost | Actual cost | Building | Text2 | Text3 |
| --- | --- | --- | --- | --- | --- | --- | --- | --- | --- | --- | --- | --- | --- | --- | --- | --- | --- | --- | --- |
| 26 | 1.2.1.5 | **slope concrete for roofs** | 60d | 2011-07-13 A | 2011-09-26 |  | 81% | 11.25d | 45.5d |  |  |  |  |  |  |  | ܁' | ܁$ | ܁% |
| 27 | 1.2.1.5.1 | Shop Drawings Preparation | 8d | 2011-07-13 A | 2011-07-21 A | 4FS+55d | 100% |  |  |  |  |  |  |  |  |  | ܁' | ܁$ | ܁% |
| 28 | 1.2.1.5.2 | Shop Drawings submittal | 5d | 2011-07-21 A | 2011-07-26 A | 27 | 100% |  |  |  |  |  |  |  |  |  | ܁' | ܁$ | ܁% |
| 29 | 1.2.1.5.3 | Shop Drawings Approval | 3d | 2011-09-24 | 2011-09-26 | 28SS+3d |  |  | 45.5d | 5d | start no earlier than 2011-09-23 |  |  |  |  |  | ܁' | ܁$ | ܁% |
| 30 | 1.2.1.6 | **Curtain walls** | 13d | 2011-09-24 | 2011-10-08 |  |  |  | 0d |  |  |  |  |  |  |  | ܁' | ܁$ | ܁% |
| 31 | 1.2.1.6.1 | Shop Drawings Preparation | 7d | 2011-09-24 | 2011-10-01 | 4FS+12d |  |  | 0d |  | start no earlier than 2011-09-23 |  |  |  |  |  | ܁' | ܁$ | ܁% |
| 32 | 1.2.1.6.2 | Shop Drawings submittal | 3d | 2011-10-02 | 2011-10-04 | 31 |  |  | 0d |  | start no earlier than 2011-09-23 |  |  |  |  |  | ܁' | ܁$ | ܁% |
| 33 | 1.2.1.6.3 | Shop Drawings Approval | 3d | 2011-10-05 | 2011-10-08 | 32SS+3d |  |  | 4d | 0d | start no earlier than 2011-09-23 |  |  |  |  |  | ܁' | ܁$ | ܁% |
| 34 | 1.2.1.7 | **Facades General Details** | 15d | 2011-09-04 A | 2011-09-21 A |  | 100% |  |  |  |  |  |  |  |  |  | ܁' | ܁$ | ܁% |
| 35 | 1.2.1.7.1 | Shop Drawings Preparation | 5d | 2011-09-04 A | 2011-09-10 A | 4FS+55d | 100% |  |  |  |  |  |  |  |  |  | ܁' | ܁$ | ܁% |
| 36 | 1.2.1.7.2 | Shop Drawings submittal | 4d | 2011-09-11 A | 2011-09-14 A | 35 | 100% |  |  |  |  |  |  |  |  |  | ܁' | ܁$ | ܁% |
| 37 | 1.2.1.7.3 | Shop Drawings Approval | 4d | 2011-09-18 A | 2011-09-21 A | 36SS+3d | 100% |  |  |  |  |  |  |  |  |  | ܁' | ܁$ | ܁% |
| 38 | 1.3 | **Construction** | 190.5d | 2011-05-10 A | 2011-12-31 |  | 5% | 181.59d | 0d |  |  |  | 77097.5h | 3253.71h | 9,105,785 | 151,570 | ܁6 | ܁$ | ܁% |
| 39 | 1.3.1 | **stage 1 (Adm1:4, Adm A: Adm N) Administration Building** | 137d | 2011-06-21 A | 2011-12-10 |  | 1% | 135.19d | 17.5d |  |  |  | 11837.3h | 600h | 1,257,100 | 17,100 | ܁7 | ܁$ | ܁& |
| 40 | 1.3.1.1 | **Ground Floor** | 88d | 2011-08-01 A | 2011-11-23 |  | 1% | 86.86d | 31.5d |  |  |  | 6925.33h | 420h | 520,600 | 8,550 |  |  | ܁& |
| 41 | 3.5.7.3 | Masonry [GR] | 14.85d | 2011-06-10 A | 2011-09-20 A |  | 100% |  |  |  |  |  | 1039.5h | 1039.5h | 141,648 |  |  |  |  |
| 42 | 1.3.1.1.2 | MEP works (by others) above ceiling | 13d | 2011-09-24 | 2011-10-08 | 41SS+45d |  |  | 5d |  | start no earlier than 2011-09-23 |  |  |  |  |  |  |  | ܁& |
| 43 | 1.3.1.1.3 | MEP works (by others) walls | 13d | 2011-09-24 | 2011-10-08 | 41SS+30d |  |  | 0d |  | start no earlier than 2011-09-23 |  |  |  |  |  |  |  |  |
| 44 | 1.3.1.1.4 | MEP works (by others)floors | 10d | 2011-09-24 | 2011-10-04 | 41SS+40d |  |  | 53.5d | 12d | start no earlier than 2011-09-23 |  |  |  |  |  |  |  |  |
| 45 | 1.3.1.1.5 | Internal plaster for walls and ceilings | 14d | 2011-08-01 A | 2011-10-30 | 5, 43FF+19d | 15% | 11.9d | 0d |  |  | Plaster [2500%] | 2800h | 420h | 57,000 | 8,550 |  |  | ܁& |
| 46 | 1.3.1.1.6 | Gypsum Boards and Gypsum tiles for ceilings | 20d | 2011-10-03 | 2011-10-25 | 21FS+5d, 45SS+20d, 42FF+10d |  |  | 0d |  | start no earlier than 2011-09-23 | Miscelaneous Labor [160%] | 256h |  | 81,250 |  |  |  | ܁& |
| 47 | 1.3.1.1.7 | Internal paints first coat | 20d | 2011-10-16 | 2011-11-14 | 45SS+60d |  |  | 31.5d | 0d |  | Painter [1250%] | 2000h |  | 43,200 |  |  |  | ܁& |
| 48 | 1.3.1.1.8 | ceramic for walls | 8d | 2011-10-10 | 2011-10-18 | 45SS+55d, 43FF+8d |  |  | 41.5d | 0d |  | Tiler [612.5%] | 392h |  | 44,150 |  |  |  | ܁& |
| 49 | 1.3.1.1.9 | Ceramic floor tiles and skirting | 8d | 2011-10-19 | 2011-10-27 | 42FF, 13FS+10d, 44FF+8d, 48, 45SS+10d |  |  | 41.5d | 0d |  | Tiler [387.5%] | 248h |  | 34,000 |  |  |  | ܁& |
| 50 | 1.3.1.1.10 | Ceramic for flooring | 8d | 2011-10-19 | 2011-10-27 | 48, 13FS+10d, 44FF+8d, 42FF |  |  | 41.5d | 0d |  | Tiler [225%] | 144h |  | 61,000 |  |  |  | ܁& |
| 51 | 1.3.1.1.11 | Indoor aluminum and Glass partitions | 12d | 2011-10-31 | 2011-11-20 | 25FS+15d, 45 |  |  | 0d |  | start no earlier than 2011-09-23 | Miscelaneous Labor [250%] | 240h |  | 115,000 |  |  |  | ܁& |
| 52 | 1.3.1.1.12 | Granite for stairs | 8d | 2011-10-18 | 2011-10-26 | 45FS-11d |  |  | 42.5d | 11d | start no earlier than 2011-09-23 | Tiler | 64h |  | 8,000 |  |  |  | ܁& |
| 53 | 1.3.1.1.13 | Marble for counters | 7d | 2011-10-19 | 2011-10-26 | 49SS, 50SS |  |  | 41.5d | 10d |  | Tiler [71.4%] | 40h |  | 5,000 |  |  |  | ܁& |
| 54 | 1.3.1.1.14 | Steel Doors | 7d | 2011-10-31 | 2011-11-14 | 17FS+15d, 45 |  |  | 0d |  | start no earlier than 2011-09-23 | Miscelaneous Labor [200%] | 112h |  | 8,000 |  |  |  | ܁& |
| 55 | 1.3.1.1.15 | Internal paints for walls and ceilings final coat | 8d | 2011-11-15 | 2011-11-23 | 51SS, 52FS-1d, 53, 47, 54SS |  |  | 31.5d |  |  | Painter [833.3%] | 533.33h |  | 29,000 |  |  |  | ܁& |
| 56 | 1.3.1.1.16 | aluminum doors | 6d | 2011-10-29 | 2011-11-03 | 48, 49, 50 |  |  | 42.5d |  |  | Miscelaneous Labor [200%] | 96h |  | 35,000 |  |  |  | ܁& |

| ID | WBS | Task | Duration | Start | Finish | Predecessors | Complete | Remaining | Total slack | Free slack | Constraint | Resources | Work | Actual work | Cost | Actual cost | Building | Text3 | Text2 |
| --- | --- | --- | --- | --- | --- | --- | --- | --- | --- | --- | --- | --- | --- | --- | --- | --- | --- | --- | --- |
| 57 | 1.3.1.2 | **First floor** | 137d | 2011-06-21 A | 2011-12-10 |  | 1% | 135.16d | 17.5d |  |  |  | 4912h | 180h | 736,500 | 8,550 | ܁( | ܁& |  |
| 58 | 3.5.2.3 | Masonry [1st] | 20.93d | 2011-06-10 A | 2011-08-03 A |  | 100% |  |  |  |  |  | 1464.75h | 1464.75h | 141,648 |  |  |  |  |
| 59 | 1.3.1.2.2 | MEP works (by others) above ceiling | 16d | 2011-09-24 | 2011-10-11 | 58SS+30d |  |  | 13d |  | start no earlier than 2011-09-23 |  |  |  |  |  | ܁( | ܁& |  |
| 60 | 1.3.1.2.3 | MEP works (by others) walls | 15d | 2011-09-24 | 2011-10-10 | 58SS+20d |  |  | 0d |  | start no earlier than 2011-09-23 |  |  |  |  |  |  |  |  |
| 61 | 1.3.1.2.4 | MEP works (by others) floors | 15d | 2011-09-24 | 2011-10-10 | 58SS+45d |  |  | 33.5d | 16d | start no earlier than 2011-09-23 |  |  |  |  |  |  |  |  |
| 62 | 1.3.1.2.5 | Internal plaster for walls and ceilings | 14d | 2011-06-21 A | 2011-10-26 | 5, 58FS+12d, 60FF+14d | 15% | 11.9d | 0d |  | start no earlier than 2011-07-13 | Plaster [1071.4%] | 1200h | 180h | 57,000 | 8,550 | ܁( | ܁& |  |
| 63 | 1.3.1.2.6 | Gypsum Boards and Gypsum tiles for ceilings | 12d | 2011-10-27 | 2011-11-16 | 21FS+5d, 62, 59FF+12d |  |  | 0d |  | start no earlier than 2011-09-23 | Miscelaneous Labor [191.7%] | 184h |  | 115,000 |  | ܁( | ܁& |  |
| 64 | 1.3.1.2.7 | Internal paints first coat | 12d | 2011-11-02 | 2011-11-22 | 63SS+5d |  |  | 20.5d | 3d | start no earlier than 2011-09-23 | Painter [833.3%] | 800h |  | 45,000 |  | ܁( | ܁& |  |
| 65 | 1.3.1.2.8 | ceramic for walls | 6d | 2011-10-27 | 2011-11-02 | 62, 60FF+6d |  |  | 17.5d | 0d | start no earlier than 2011-09-23 | Tiler [816.7%] | 392h |  | 45,000 |  | ܁( | ܁& |  |
| 66 | 1.3.1.2.9 | Ceramic floor tiles and skirting | 12d | 2011-10-30 | 2011-11-19 | 65SS+2d, 59FF, 13FS+20d, 60FF+12d, 61FF+12d |  |  | 17.5d | 0d | start no earlier than 2011-09-23 | Tiler [350%] | 336h |  | 145,000 |  | ܁( | ܁& |  |
| 67 | 1.3.1.2.10 | Ceramic for flooring | 6d | 2011-11-03 | 2011-11-16 | 65, 13FS+20d, 61FF+6d, 59FF |  |  | 19.5d | 0d | start no earlier than 2011-09-23 | Tiler [233.3%] | 112h |  | 47,000 |  | ܁( | ܁& |  |
| 68 | 1.3.1.2.11 | Marble for counters | 6d | 2011-11-03 | 2011-11-16 | 66SS, 67SS |  |  | 25.5d | 8d |  | Tiler | 48h |  | 2,000 |  | ܁( | ܁& |  |
| 69 | 1.3.1.2.12 | Miscelanous metal works(handrails,….) | 6d | 2011-11-20 | 2011-11-26 | 66, 67, 17FS+30d |  |  | 17.5d | 0d |  | Miscelaneous Labor [333.3%] | 160h |  | 2,000 |  | ܁( | ܁& |  |
| 70 | 1.3.1.2.13 | Indoor aluminum and Glass partitions | 8d | 2011-11-01 | 2011-11-16 | 25FS+30d, 62 |  |  | 25.5d | 8d | start no earlier than 2011-09-23 | Miscelaneous Labor [300%] | 192h |  | 142,000 |  | ܁( | ܁& |  |
| 71 | 1.3.1.2.14 | Internal paints for walls and ceilings final coat | 8d | 2011-11-27 | 2011-12-05 | 70, 69, 68, 64 |  |  | 17.5d | 0d |  | Painter [1250%] | 800h |  | 29,000 |  | ܁( | ܁& |  |
| 72 | 1.3.1.2.15 | Granite for stairs | 7d | 2011-10-27 | 2011-11-03 | 62 |  |  | 42.5d |  | start no earlier than 2011-09-23 | Tiler | 56h |  | 8,000 |  | ܁( | ܁& |  |
| 73 | 1.3.1.2.16 | aluminum doors | 6d | 2011-11-20 | 2011-11-26 | 66, 67 |  |  | 29.5d |  |  | Miscelaneous Labor [500%] | 240h |  | 75,000 |  | ܁( | ܁& |  |
| 74 | 1.3.1.2.17 | Epoxy Flooring | 7d | 2011-12-03 | 2011-12-10 | 71SS+5d |  |  | 17.5d |  |  | Miscelaneous Labor [700%] | 392h |  | 24,500 |  | ܁( | ܁& |  |
| 75 | 1.3.2 | **Production Area ( stage 3 )** | 79d | 2011-08-27 A | 2011-12-08 |  | 3% | 76.47d | 18.5d |  |  |  | 20931.8h | 429.71h | 2,073,300 | 19,600 | ܁8 | ܁& | ܁$ |
| 76 | 1.3.2.1 | **Ground Floor** | 61d | 2011-09-01 A | 2011-11-21 |  | 8% | 55.88d | 33.5d |  |  |  | 5114.67h |  | 567,700 |  |  | ܁& |  |
| 77 | 3.2.7.3 | Masonry [GR] | 10d | 2011-07-18 A | 2011-09-24 |  | 50% | 5d | 58.8d | 1.75d | start no earlier than 2011-06-22 |  | 700h | 350h | 141,647.73 |  |  |  |  |
| 78 | 1.3.2.1.2 | MEP works (by others) walls | 4d | 2011-09-24 | 2011-09-27 | 77SS+5d |  |  | 5d |  | start no earlier than 2011-09-23 |  |  |  |  |  |  | ܁& |  |
| 79 | 1.3.2.1.3 | MEP works (by others)floors | 6d | 2011-09-07 A | 2011-09-24 | 77SS+25d | 90% | 0.6d | 27.4d | 16.4d | start no earlier than 2011-09-23 |  |  |  |  |  |  |  |  |
| 80 | 1.3.2.1.4 | MEP works (by others) above ceiling | 6d | 2011-09-01 A | 2011-09-24 | 77SS+20d | 83% | 1d | 11d |  | start no earlier than 2011-09-23 |  |  |  |  |  |  |  |  |
| 81 | 1.3.2.1.5 | Internal plaster for walls and ceilings | 14d | 2011-09-24 | 2011-10-09 | 5FS+50d, 78FF+5d |  |  | 0d |  | start no earlier than 2011-09-23 | Plaster [1666.7%] | 1866.67h |  | 75,000 |  |  | ܁& |  |
| 82 | 1.3.2.1.6 | Gypsum Boards and Gypsum tiles for ceilings | 20d | 2011-10-08 | 2011-10-30 | 21FS+5d, 81SS+12d, 80FF+20d |  |  | 0d |  | start no earlier than 2011-09-23 | Miscelaneous Labor [120%] | 192h |  | 103,000 |  |  | ܁& |  |
| 83 | 1.3.2.1.7 | Internal paints first coat | 12d | 2011-10-16 | 2011-10-29 | 81FS+5d |  |  | 39.5d | 0d | start no earlier than 2011-09-23 | Painter [1625%] | 1560h |  | 57,000 |  |  | ܁& |  |
| 84 | 1.3.2.1.8 | Industrial tiles for flooring | 20d | 2011-10-13 | 2011-11-12 | 82SS+5d, 78FF+5d, 79FF+20d, 80FF |  |  | 33.5d | 0d | start no earlier than 2011-09-23 | Tiler [275%] | 440h |  | 180,000 |  |  | ܁& |  |
| 85 | 1.3.2.1.9 | Ceramic floor tiles and skirting | 9d | 2011-10-20 | 2011-10-30 | 82SS+5d, 78FF+5d, 13FS+20d, 79FF+6d, 80FF |  |  | 38.5d | 5d | start no earlier than 2011-09-23 | Tiler [200%] | 144h |  | 12,500 |  |  | ܁& |  |
| 86 | 1.3.2.1.10 | Granite for stairs | 6d | 2011-10-25 | 2011-10-31 | 81FS+13d |  |  | 45.5d |  | start no earlier than 2011-09-23 | Tiler | 48h |  | 5,000 |  |  | ܁& |  |
| 87 | 1.3.2.1.11 | Indoor aluminum and Glass partitions | 7d | 2011-10-26 | 2011-11-02 | 25FS+25d, 78FF+5d, 79FF+7d, 81 |  |  | 0d |  | start no earlier than 2011-09-23 | Miscelaneous Labor [200%] | 112h |  | 74,000 |  |  | ܁& |  |
| 88 | 1.3.2.1.12 | Steel Doors | 6d | 2011-10-25 | 2011-10-31 | 81FS+13d |  |  | 0d |  | start no earlier than 2011-09-23 | Miscelaneous Labor | 48h |  | 5,200 |  |  | ܁& |  |
| 89 | 1.3.2.1.13 | aluminum doors | 6d | 2011-10-25 | 2011-10-31 | 83SS+8d |  |  | 45.5d |  | start no earlier than 2011-09-23 | Miscelaneous Labor [133.3%] | 64h |  | 18,000 |  |  | ܁& |  |
| 90 | 1.3.2.1.14 | Internal paints for walls and ceilings final coat | 8d | 2011-11-13 | 2011-11-21 | 87SS, 88SS+2d, 83, 85, 84 |  |  | 33.5d |  |  | Painter [1000%] | 640h |  | 38,000 |  |  | ܁& |  |

| ID | WBS | Task | Duration | Start | Finish | Predecessors | Complete | Remaining | Total slack | Free slack | Constraint | Resources | Work | Actual work | Cost | Actual cost | Building | Text3 |
| --- | --- | --- | --- | --- | --- | --- | --- | --- | --- | --- | --- | --- | --- | --- | --- | --- | --- | --- |
| 91 | 1.3.2.2 | **First Floor** | 79d | 2011-08-27 A | 2011-12-08 |  | 1% | 78.08d | 18.5d |  |  |  | 7105.14h | 237.71h | 729,300 | 10,100 | ܁, | ܁& |
| 92 | 3.2.2.3 | Masonry [1st] | 12.25d | 2011-08-02 A | 2011-08-12 A |  | 100% |  |  |  | start no earlier than 2011-07-25 |  | 857.5h | 857.5h | 141,647.73 |  |  |  |
| 93 | 1.3.2.2.2 | MEP works (by others) walls | 10d | 2011-09-24 | 2011-10-04 | 92SS+7d |  |  | 8d | 0d | start no earlier than 2011-09-23 |  |  |  |  |  | ܁, | ܁& |
| 94 | 1.3.2.2.3 | MEP works (by others)floors | 10d | 2011-09-24 | 2011-10-04 | 92SS+25d |  |  | 23d |  | start no earlier than 2011-09-23 |  |  |  |  |  |  |  |
| 95 | 1.3.2.2.4 | MEP works (by others) above ceiling | 10d | 2011-09-24 | 2011-10-04 | 92SS+20d |  |  | 33.5d | 15d | start no earlier than 2011-09-23 |  |  |  |  |  |  |  |
| 96 | 1.3.2.2.5 | Internal plaster for walls and ceilings | 16d | 2011-08-27 A | 2011-10-22 | 5FS+57d, 93FF+15d | 10% | 14.4d | 8d | 0d |  | Plaster [1857.1%] | 2377.14h | 237.71h | 101,000 | 10,100 | ܁, | ܁& |
| 97 | 1.3.2.2.6 | Gypsum Boards and Gypsum tiles for ceilings | 12d | 2011-10-23 | 2011-11-12 | 21FS+5d, 96, 95FF+12d |  |  | 18.5d | 0d | start no earlier than 2011-09-23 | Miscelaneous Labor [300%] | 288h |  | 182,000 |  | ܁, | ܁& |
| 98 | 1.3.2.2.7 | Internal paints first coat | 8d | 2011-10-30 | 2011-11-14 | 97SS+6d |  |  | 18.5d | 0d |  | Painter [2212.5%] | 1416h |  | 77,000 |  | ܁, | ܁& |
| 99 | 1.3.2.2.8 | Ceramic floor tiles and skirting | 10d | 2011-10-29 | 2011-11-15 | 97SS+5d, 93FF+5d, 13FS+20d, 94FF+5d, 95FF |  |  | 18.5d | 0d |  | Tiler [160%] | 128h |  | 8,300 |  | ܁, | ܁& |
| 100 | 1.3.2.2.9 | Industrial tiles for flooring | 10d | 2011-11-03 | 2011-11-21 | 97FS-2d, 93FF+10d, 94FF+10d, 95FF |  |  | 27.5d | 0d |  | Tiler [220%] | 176h |  | 78,000 |  | ܁, | ܁& |
| 101 | 1.3.2.2.10 | Indoor aluminum and Glass partitions | 13d | 2011-11-01 | 2011-11-22 | 25FS+30d, 93FF+13d, 94FF+13d, 96 |  |  | 0d |  | start no earlier than 2011-09-23 | Miscelaneous Labor | 104h |  | 25,000 |  | ܁, | ܁& |
| 102 | 1.3.2.2.11 | Internal paints for walls and ceilings final coat | 7d | 2011-11-15 | 2011-11-22 | 101SS+3d, 98, 99FS-1d |  |  | 18.5d | 0d |  | Painter [1500%] | 840h |  | 51,000 |  | ܁, | ܁& |
| 103 | 1.3.2.2.12 | Granite for stairs | 6d | 2011-10-23 | 2011-10-29 | 96 |  |  | 47.5d |  | start no earlier than 2011-09-23 | Tiler | 48h |  | 5,000 |  | ܁, | ܁& |
| 104 | 1.3.2.2.13 | Miscelanous metal works(handrails,….) | 6d | 2011-11-22 | 2011-11-28 | 100, 17FS+30d |  |  | 27.5d |  |  | Miscelaneous Labor | 48h |  | 2,000 |  | ܁, | ܁& |
| 105 | 1.3.2.2.14 | aluminum doors | 6d | 2011-11-12 | 2011-11-17 | 96FS+11d |  |  | 36.5d |  | start no earlier than 2011-09-23 | Miscelaneous Labor [166.7%] | 80h |  | 25,000 |  | ܁, | ܁& |
| 106 | 1.3.2.2.15 | Epoxy Flooring | 14d | 2011-11-23 | 2011-12-08 | 102 |  |  | 18.5d |  |  | Miscelaneous Labor [1428.6%] | 1600h |  | 175,000 |  | ܁, | ܁& |
| 107 | 1.3.2.3 | **Second floor** | 68d | 2011-09-06 A | 2011-11-30 |  | 1% | 67.23d | 25.5d |  |  |  | 7792h | 192h | 465,700 | 9,500 | ܁- | ܁& |
| 108 | 3.2.3.3 | Masonry [2nd] | 9d | 2011-08-11 A | 2011-09-17 |  | 90% | 0.9d | 65.6d | 3.12d |  |  | 630h | 567h | 141,647.73 |  |  |  |
| 109 | 1.3.2.3.2 | MEP works (by others) walls | 9d | 2011-09-24 | 2011-10-03 | 108SS+7d |  |  | 25.5d | 0d | start no earlier than 2011-09-23 |  |  |  |  |  | ܁- | ܁& |
| 110 | 1.3.2.3.3 | MEP works (by others)floors | 10d | 2011-09-24 | 2011-10-04 | 108SS+25d |  |  | 52.5d | 19d | start no earlier than 2011-09-23 |  |  |  |  |  |  |  |
| 111 | 1.3.2.3.4 | MEP works (by others) above ceiling | 10d | 2011-09-24 | 2011-10-04 | 108SS+15d |  |  | 36.5d | 11d | start no earlier than 2011-09-23 |  |  |  |  |  |  |  |
| 112 | 1.3.2.3.5 | Internal plaster for walls and ceilings | 14d | 2011-09-06 A | 2011-10-17 | 109FF+12d | 10% | 12.6d | 25.5d | 0d |  | Plaster [1714.3%] | 1920h | 192h | 95,000 | 9,500 | ܁- | ܁& |
| 113 | 1.3.2.3.6 | Gypsum Boards and Gypsum tiles for ceilings | 8d | 2011-10-18 | 2011-10-26 | 21FS+5d, 112, 111FF+8d |  |  | 25.5d | 0d | start no earlier than 2011-09-23 | Miscelaneous Labor [300%] | 192h |  | 122,000 |  | ܁- | ܁& |
| 114 | 1.3.2.3.7 | Internal paints first coat | 20d | 2011-10-19 | 2011-11-17 | 113SS+1d |  |  | 25.5d | 0d |  | Painter [2000%] | 3200h |  | 70,000 |  | ܁- | ܁& |
| 115 | 1.3.2.3.8 | Ceramic floor tiles and skirting | 6d | 2011-10-27 | 2011-11-02 | 113, 109FF+6d, 13FS+20d, 110FF+6d, 111FF |  |  | 33.5d | 0d |  | Tiler [666.7%] | 320h |  | 43,200 |  | ܁- | ܁& |
| 116 | 1.3.2.3.9 | Indoor aluminum and Glass partitions | 8d | 2011-11-01 | 2011-11-16 | 25FS+30d, 110FF+8d, 112 |  |  | 31.5d | 6d |  | Miscelaneous Labor | 64h |  |  |  | ܁- | ܁& |
| 117 | 1.3.2.3.10 | Miscelanous metal works(handrails,….) | 10d | 2011-11-03 | 2011-11-21 | 115, 17FS+30d |  |  | 33.5d |  |  | Miscelaneous Labor | 80h |  | 2,000 |  | ܁- | ܁& |
| 118 | 1.3.2.3.11 | Granite for stairs | 6d | 2011-10-18 | 2011-10-24 | 112 |  |  | 51.5d |  | start no earlier than 2011-09-23 | Tiler | 48h |  | 5,000 |  | ܁- | ܁& |
| 119 | 1.3.2.3.12 | Internal paints for walls and ceilings final coat | 10d | 2011-11-19 | 2011-11-29 | 116FS-5d, 114 |  |  | 25.5d | 0d |  | Painter [1600%] | 1280h |  | 47,000 |  | ܁- | ܁& |
| 120 | 1.3.2.3.13 | Epoxy Flooring | 7d | 2011-11-23 | 2011-11-30 | 119SS+4d, 116FS-1d |  |  | 25.5d |  |  | Miscelaneous Labor [1142.9%] | 640h |  | 66,500 |  | ܁- | ܁& |
| 121 | 1.3.2.3.14 | aluminum doors | 6d | 2011-10-18 | 2011-10-24 | 112 |  |  | 51.5d |  | start no earlier than 2011-09-23 | Miscelaneous Labor | 48h |  | 15,000 |  | ܁- | ܁& |

| ID | WBS | Task | Type | Duration | Start | Finish | Predecessors | Complete | Remaining | Total slack | Free slack | Constraint | Resources | Work | Actual work | Cost | Actual cost | Building | Text3 | Text2 |
| --- | --- | --- | --- | --- | --- | --- | --- | --- | --- | --- | --- | --- | --- | --- | --- | --- | --- | --- | --- | --- |
| 122 | 1.3.2.4 | **Roof Floor** |  | 38d | 2011-09-23 | 2011-11-13 |  |  |  | 40.5d |  |  |  | 920h |  | 310,600 |  | ܁. | ܁& |  |
| 123 | 3.2.3.2 | Slab and beams [2nd] |  | 10.12d | 2011-07-02 A | 2011-07-26 A |  | 100% |  |  |  |  |  | 907.2h | 907.2h | 805,081.89 |  |  |  |  |
| 124 | 1.3.2.4.2 | MEP works (by others) | milestone | 0d | 2011-09-23 | 2011-09-23 | 123FS+7d |  |  | 40.5d | 0d | start no earlier than 2011-09-23 |  |  |  |  |  | ܁. | ܁& |  |
| 125 | 1.3.2.4.3 | water proofing membrane for roofs |  | 8d | 2011-10-03 | 2011-10-11 | 5FS+58d, 29, 127 |  |  | 40.5d | 0d | start no earlier than 2011-09-23 | Miscelaneous Labor [500%] | 320h |  | 71,400 |  | ܁. | ܁& |  |
| 126 | 1.3.2.4.4 | Plain concrete screed 5cm |  | 6d | 2011-10-16 | 2011-10-22 | 125FS+3d |  |  | 40.5d | 0d | start no earlier than 2011-09-23 | Miscelaneous Labor [366.7%] | 176h |  | 105,000 |  | ܁. | ܁& |  |
| 127 | 1.3.2.4.5 | sloping plain concrete for roofs |  | 8d | 2011-09-24 | 2011-10-02 | 124FF+8d |  |  | 40.5d | 0d | start no earlier than 2011-09-23 | Miscelaneous Labor [225%] | 144h |  | 46,200 |  | ܁. | ܁& |  |
| 128 | 1.3.2.4.6 | Gravel layers |  | 5d | 2011-10-23 | 2011-10-27 | 126 |  |  | 40.5d | 0d | start no earlier than 2011-09-23 | Tiler [600%] | 240h |  | 86,000 |  | ܁. | ܁& |  |
| 129 | 1.3.2.4.7 | Steel cover for Ducts |  | 5d | 2011-11-01 | 2011-11-13 | 128FS+3d |  |  | 40.5d |  |  | Miscelaneous Labor | 40h |  | 2,000 |  | ܁. | ܁& |  |
| 130 | 1.3.3 | **Production Area ( stage 4)** |  | 79d | 2011-08-27 A | 2011-12-08 |  | 2% | 77.58d | 18.5d |  |  |  | 22791.2h | 496h | 2,824,500 | 23,700 | ܁9 | ܁& | ܁$ |
| 131 | 1.3.3.1 | **Ground Floor** |  | 54.6d | 2011-09-07 A | 2011-11-16 |  | 4% | 52.43d | 37.9d |  |  |  | 6481.86h |  | 1,025,000 |  |  | ܁& |  |
| 132 | 3.3.7.3 | Masonry [GR] |  | 10d | 2011-09-05 A | 2011-09-14 |  | 80% | 2d | 67.17d | 0d | start no earlier than 2011-09-08 |  | 840h | 672h | 141,647.73 |  |  |  |  |
| 133 | 1.3.3.1.2 | MEP works (by others)floors |  | 9d | 2011-09-07 A | 2011-10-08 | 132SS+25d | 60% | 3.6d | 37.9d | 0d |  |  |  |  |  |  |  | ܁& |  |
| 134 | 1.3.3.1.3 | MEP works (by others) above ceiling |  | 13d | 2011-09-24 | 2011-10-08 | 132SS+15d |  |  | 45.5d | 4d | start no earlier than 2011-09-23 |  |  |  |  |  |  |  |  |
| 135 | 1.3.3.1.4 | MEP works (by others) walls |  | 6d | 2011-09-24 | 2011-09-29 | 132SS+7d |  |  | 0d |  | start no earlier than 2011-09-23 |  |  |  |  |  |  |  |  |
| 136 | 1.3.3.1.5 | Internal plaster for walls and ceilings |  | 18d | 2011-09-26 | 2011-10-16 | 5FS+46d, 135FF+14d |  |  | 0d |  |  | Plaster [1718.8%] | 2475h |  | 105,000 |  |  | ܁& |  |
| 137 | 1.3.3.1.6 | Gypsum Boards and Gypsum tiles for ceilings |  | 20d | 2011-10-13 | 2011-11-12 | 21FS+5d, 136SS+15d, 134FF+20d |  |  | 41.5d |  |  | Miscelaneous Labor [200%] | 320h |  | 263,000 |  |  | ܁& |  |
| 138 | 1.3.3.1.7 | Internal paints first coat |  | 12d | 2011-10-17 | 2011-10-30 | 136 |  |  | 38.5d | 0.6d |  | Painter [1800%] | 1728h |  | 80,000 |  |  | ܁& |  |
| 139 | 1.3.3.1.8 | Industrial tiles for flooring |  | 20d | 2011-10-08 | 2011-10-31 | 133FF+20d, 135FF+20d, 134FF, 136SS+10d |  |  | 37.9d | 0d |  | Tiler [560%] | 896h |  | 495,000 |  |  | ܁& |  |
| 140 | 1.3.3.1.9 | Indoor aluminum and Glass partitions |  | 8d | 2011-10-30 | 2011-11-14 | 25FS+15d, 135FF+16d, 136FS+11d |  |  | 0d |  |  | Miscelaneous Labor | 64h |  |  |  |  | ܁& |  |
| 141 | 1.3.3.1.10 | Steel Doors |  | 8d | 2011-10-20 | 2011-10-29 | 17FS+20d, 136 |  |  | 0d |  |  | Miscelaneous Labor | 64h |  | 14,000 |  |  | ܁& |  |
| 142 | 1.3.3.1.11 | aluminum doors |  | 8d | 2011-10-17 | 2011-10-25 | 136 |  |  | 45.5d | 7.6d |  | Miscelaneous Labor | 64h |  | 15,000 |  |  | ܁& |  |
| 143 | 1.3.3.1.12 | Granite for stairs |  | 6d | 2011-10-17 | 2011-10-23 | 136 |  |  | 47.5d | 9.6d |  | Tiler | 48h |  |  |  |  | ܁& |  |
| 144 | 1.3.3.1.13 | Internal paints for walls and ceilings final coat |  | 8d | 2011-10-31 | 2011-11-16 | 140SS, 141SS+3d, 142FS-3d, 143FS-3d, 138, 139 |  |  | 37.9d |  |  | Painter [1285.7%] | 822.86h |  | 53,000 |  |  | ܁& |  |
| 145 | 1.3.3.2 | **First Floor** |  | 79d | 2011-08-27 A | 2011-12-08 |  | 1% | 78.33d | 18.5d |  |  |  | 7704h | 256h | 626,500 | 12,200 | ܁0 | ܁& |  |
| 146 | 3.3.2.3 | Masonry [1st] |  | 16.75d | 2011-08-01 A | 2011-08-15 A |  | 100% |  |  |  | start no earlier than 2011-07-25 |  | 1172.5h | 1172.5h | 141,647.73 |  |  |  |  |
| 147 | 1.3.3.2.2 | MEP works (by others)floors |  | 10d | 2011-09-24 | 2011-10-04 | 146SS+8d |  |  | 0d |  | start no earlier than 2011-09-23 |  |  |  |  |  | ܁0 | ܁& |  |
| 148 | 1.3.3.2.3 | MEP works (by others) above ceiling |  | 10d | 2011-09-24 | 2011-10-04 | 146SS+20d |  |  | 12d |  | start no earlier than 2011-09-23 |  |  |  |  |  |  |  |  |
| 149 | 1.3.3.2.4 | MEP works (by others) walls |  | 9d | 2011-09-24 | 2011-10-03 | 146SS+9d |  |  | 2d |  | start no earlier than 2011-09-23 |  |  |  |  |  |  |  |  |
| 150 | 1.3.3.2.5 | Internal plaster for walls and ceilings |  | 14d | 2011-08-27 A | 2011-10-22 | 147FF+15d, 149FF+14d | 10% | 12.6d | 0d |  |  | Plaster [2285.7%] | 2560h | 256h | 122,000 | 12,200 | ܁0 | ܁& |  |
| 151 | 1.3.3.2.6 | Gypsum Boards and Gypsum tiles for ceilings |  | 12d | 2011-10-19 | 2011-11-01 | 21FS+5d, 150FS-3d, 148FF+12d |  |  | 0d |  | start no earlier than 2011-09-23 | Miscelaneous Labor [200%] | 192h |  | 87,500 |  | ܁0 | ܁& |  |
| 152 | 1.3.3.2.7 | Internal paints first coat |  | 8d | 2011-11-02 | 2011-11-17 | 151 |  |  | 20.5d | 2d |  | Painter [2625%] | 1680h |  | 93,000 |  | ܁0 | ܁& |  |
| 153 | 1.3.3.2.8 | Ceramic floor tiles and skirting |  | 4d | 2011-11-02 | 2011-11-13 | 151, 13FS+20d, 149FF+4d, 147FF+4d, 148FF |  |  | 3d |  |  | Tiler | 32h |  |  |  | ܁0 | ܁& |  |
| 154 | 1.3.3.2.9 | Cement tiles |  | 12d | 2011-11-02 | 2011-11-22 | 151, 149FF+12d, 147FF+12d, 148FF |  |  | 0d |  |  | Tiler [466.7%] | 448h |  | 65,000 |  | ܁0 | ܁& |  |
| 155 | 1.3.3.2.10 | Industrial tiles for flooring |  | 10d | 2011-11-02 | 2011-11-20 | 151, 149FF+10d, 147FF+10d, 148FF |  |  | 0d |  |  | Tiler [400%] | 320h |  | 130,000 |  | ܁0 | ܁& |  |
| 156 | 1.3.3.2.11 | aluminum doors |  | 17d | 2011-10-23 | 2011-11-17 | 150 |  |  | 0d |  | start no earlier than 2011-09-23 | Miscelaneous Labor [250%] | 340h |  | 38,000 |  | ܁0 | ܁& |  |
| 157 | 1.3.3.2.12 | Indoor aluminum and Glass partitions |  | 15d | 2011-11-01 | 2011-11-24 | 25FS+30d, 147FF+15d, 150 |  |  | 25.5d | 7d | start no earlier than 2011-09-23 | Miscelaneous Labor | 120h |  |  |  | ܁0 | ܁& |  |
| 158 | 1.3.3.2.13 | Miscelanous metal works(handrails,….) |  | 16d | 2011-11-17 | 2011-12-05 | 153, 154SS+2d, 155SS+7d, 17FS+30d |  |  | 0d |  |  | Miscelaneous Labor | 128h |  | 2,000 |  | ܁0 | ܁& |  |
| 159 | 1.3.3.2.14 | Internal paints for walls and ceilings final coat |  | 11d | 2011-11-21 | 2011-12-03 | 157SS+3d, 158SS+3d, 156SS+3d, 152, 160 |  |  | 18.5d | 0d |  | Painter [1750%] | 1540h |  | 62,000 |  | ܁0 | ܁& |  |
| 160 | 1.3.3.2.15 | Granite for stairs |  | 13d | 2011-10-23 | 2011-11-13 | 150 |  |  | 24.5d | 6d | start no earlier than 2011-09-23 | Tiler | 104h |  |  |  | ܁0 | ܁& |  |
| 161 | 1.3.3.2.16 | Epoxy Flooring |  | 5d | 2011-12-04 | 2011-12-08 | 159, 157 |  |  | 18.5d |  |  | Miscelaneous Labor [600%] | 240h |  | 27,000 |  | ܁0 | ܁& |  |

| ID | WBS | Task | Duration | Start | Finish | Predecessors | Complete | Remaining | Total slack | Free slack | Constraint | Resources | Work | Actual work | Cost | Actual cost | Building | Text3 | Text2 |
| --- | --- | --- | --- | --- | --- | --- | --- | --- | --- | --- | --- | --- | --- | --- | --- | --- | --- | --- | --- |
| 162 | 1.3.3.3 | **Second floor** | 68d | 2011-09-06 A | 2011-11-30 |  | 1% | 67.24d | 25.5d |  |  |  | 7405.33h | 240h | 431,000 | 11,500 | ܁1 | ܁& |  |
| 163 | 3.3.3.3 | Masonry [2nd] | 22.5d | 2011-07-23 A | 2011-09-22 A |  | 100% |  |  |  |  |  | 1890h | 1890h | 141,647.73 |  |  |  |  |
| 164 | 1.3.3.3.2 | MEP works (by others)floors | 10d | 2011-09-24 | 2011-10-04 | 163SS+40d |  |  | 68.5d | 43d | start no earlier than 2011-09-23 |  |  |  |  |  | ܁1 | ܁& |  |
| 165 | 1.3.3.3.3 | MEP works (by others) above ceiling | 10d | 2011-09-24 | 2011-10-04 | 163SS+15d |  |  | 9d |  | start no earlier than 2011-09-23 |  |  |  |  |  |  |  |  |
| 166 | 1.3.3.3.4 | MEP works (by others) walls | 10d | 2011-09-24 | 2011-10-04 | 163SS+7d |  |  | 0d |  | start no earlier than 2011-09-23 |  |  |  |  |  |  |  |  |
| 167 | 1.3.3.3.5 | Internal plaster for walls and ceilings | 12d | 2011-09-06 A | 2011-10-15 | 166FF+9d | 10% | 10.8d | 0d |  |  | Plaster [2500%] | 2400h | 240h | 115,000 | 11,500 | ܁1 | ܁& |  |
| 168 | 1.3.3.3.6 | Internal paints first coat | 10d | 2011-10-16 | 2011-10-26 | 169SS |  |  | 32.5d | 4d | start no earlier than 2011-09-23 | Painter [2500%] | 2000h |  | 87,000 |  | ܁1 | ܁& |  |
| 169 | 1.3.3.3.7 | Gypsum Boards and Gypsum tiles for ceilings | 13d | 2011-10-16 | 2011-10-30 | 21FS+5d, 167, 165FF+13d |  |  | 0d |  | start no earlier than 2011-09-23 | Miscelaneous Labor | 104h |  | 60,000 |  | ܁1 | ܁& |  |
| 170 | 1.3.3.3.8 | Indoor aluminum and Glass partitions | 7d | 2011-11-01 | 2011-11-15 | 25FS+30d, 166FF+7d, 167 |  |  | 25.5d | 0d | start no earlier than 2011-09-23 | Miscelaneous Labor | 56h |  |  |  | ܁1 | ܁& |  |
| 171 | 1.3.3.3.9 | Miscelanous metal works(handrails,….) | 6d | 2011-11-01 | 2011-11-14 | 17FS+30d, 168 |  |  | 39.5d |  |  | Miscelaneous Labor | 48h |  | 2,000 |  | ܁1 | ܁& |  |
| 172 | 1.3.3.3.10 | aluminum doors | 8d | 2011-10-16 | 2011-10-24 | 167 |  |  | 51.5d |  | start no earlier than 2011-09-23 | Miscelaneous Labor [133.3%] | 85.33h |  | 20,000 |  | ܁1 | ܁& |  |
| 173 | 1.3.3.3.11 | Granite for stairs | 6d | 2011-10-16 | 2011-10-22 | 167 |  |  | 36.5d | 11d | start no earlier than 2011-09-23 | Tiler | 48h |  | 5,000 |  | ܁1 | ܁& |  |
| 174 | 1.3.3.3.12 | Internal paints for walls and ceilings final coat | 8d | 2011-11-12 | 2011-11-20 | 173, 170SS+3d, 168 |  |  | 25.5d | 0d |  | Painter [2500%] | 1600h |  | 58,000 |  | ܁1 | ܁& |  |
| 175 | 1.3.3.3.13 | Epoxy Flooring | 7d | 2011-11-23 | 2011-11-30 | 174FS+2d, 170, 164FF, 166FF+7d, 165FF |  |  | 25.5d |  |  | Miscelaneous Labor [1900%] | 1064h |  | 84,000 |  | ܁1 | ܁& |  |
| 176 | 1.3.3.4 | **Roof Floor** | 39d | 2011-09-24 | 2011-11-14 |  |  |  | 39.5d |  |  |  | 1200h |  | 742,000 |  | ܁2 | ܁& |  |
| 177 | 1.3.3.4.1 | MEP works (by others) | 4d | 2011-09-24 | 2011-09-27 | 163SS+4d |  |  | 39.5d | 0d | start no earlier than 2011-09-23 |  |  |  |  |  | ܁2 | ܁& |  |
| 178 | 1.3.3.4.2 | water proofing membrane for roofs | 8d | 2011-10-08 | 2011-10-16 | 5FS+65d, 29, 180 |  |  | 39.5d | 0d | start no earlier than 2011-09-23 | Miscelaneous Labor [750%] | 480h |  | 97,000 |  | ܁2 | ܁& |  |
| 179 | 1.3.3.4.3 | Plain concrete screed 5cm | 6d | 2011-10-20 | 2011-10-26 | 178FS+3d |  |  | 39.5d | 0d | start no earlier than 2011-09-23 | Miscelaneous Labor [500%] | 240h |  | 140,000 |  | ܁2 | ܁& |  |
| 180 | 1.3.3.4.4 | sloping plain concrete for roofs | 8d | 2011-09-28 | 2011-10-06 | 177FF+8d |  |  | 39.5d | 0d | start no earlier than 2011-09-23 | Miscelaneous Labor [300%] | 192h |  | 63,000 |  | ܁2 | ܁& |  |
| 181 | 1.3.3.4.5 | Gravel layers | 5d | 2011-10-27 | 2011-11-01 | 179 |  |  | 39.5d | 0d | start no earlier than 2011-09-23 | Tiler [620%] | 248h |  | 440,000 |  | ܁2 | ܁& |  |
| 182 | 1.3.3.4.6 | Steel cover for Ducts | 5d | 2011-11-02 | 2011-11-14 | 181 |  |  | 39.5d |  |  | Miscelaneous Labor | 40h |  | 2,000 |  | ܁2 | ܁& |  |
| 183 | 1.3.4 | **Raw material warehouse (stage 2 )** | 64.8d | 2011-09-17 A | 2011-12-07 |  | 2% | 63.71d | 19.7d |  |  |  | 5432h | 208h | 814,600 | 9,900 | ܁: | ܁& | ܁$ |
| 184 | 1.3.4.1 | **Internal** | 64.8d | 2011-09-17 A | 2011-12-07 |  | 3% | 62.67d | 19.7d |  |  |  | 3624h | 208h | 244,000 | 9,900 |  | ܁& |  |
| 185 | 3.1.7.3 | Masonry [GR](all levels) | 12.25d | 2011-05-21 A | 2011-09-12 |  | 80% | 2.45d | 22.35d | 16.93d |  |  | 1029h | 823.2h | 141,648 |  |  |  |  |
| 186 | 1.3.4.1.2 | MEP works (by others) walls | 12d | 2011-09-24 | 2011-10-06 | 185FS-7d |  |  | 11.8d | 0d | start no earlier than 2011-09-23 |  |  |  |  |  |  | ܁& |  |
| 187 | 1.3.4.1.3 | Internal plaster for walls | 22d | 2011-09-17 A | 2011-11-14 | 5FS+80d, 186FF+15d | 10% | 19.8d | 0d |  |  | Plaster [1181.8%] | 2080h | 208h | 99,000 | 9,900 |  | ܁& |  |
| 188 | 1.3.4.1.4 | Ceramic floor tiles and skirting | 5d | 2011-11-14 | 2011-11-20 | 187, 13FS+20d |  |  | 0d |  |  | Tiler | 40h |  | 2,000 |  |  | ܁& |  |
| 189 | 1.3.4.1.5 | Steel Doors | 8d | 2011-11-14 | 2011-11-23 | 187, 17FS+30d |  |  | 31.7d |  |  | Miscelaneous Labor | 64h |  | 18,000 |  |  | ܁& |  |
| 190 | 1.3.4.1.6 | Internal paints | 20d | 2011-11-14 | 2011-12-07 | 188SS, 187 |  |  | 19.7d |  |  | Painter [900%] | 1440h |  | 125,000 |  |  | ܁& |  |

| ID | WBS | Task | Duration | Start | Finish | Predecessors | Complete | Remaining | Total slack | Free slack | Constraint | Resources | Work | Actual work | Cost | Building | Text3 | Text2 |
| --- | --- | --- | --- | --- | --- | --- | --- | --- | --- | --- | --- | --- | --- | --- | --- | --- | --- | --- |
| 191 | 1.3.4.2 | **Façades** | 33d | 2011-09-24 | 2011-10-31 |  |  |  | 9d |  |  |  | 1808h |  | 570,600 | ܁4 | ܁& |  |
| 192 | 1.3.4.2.1 | MEP works (by others) | 5d | 2011-09-24 | 2011-09-28 | 186SS, 185SS+7d |  |  | 17d |  | start no earlier than 2011-09-23 |  |  |  |  | ܁4 | ܁& |  |
| 193 | 1.3.4.2.2 | External plaster for facades | 15d | 2011-10-04 | 2011-10-20 | 192FF+2d, 37FS+10d |  |  | 0d |  | start no earlier than 2011-09-23 | Plaster [520%] | 624h |  | 57,000 | ܁4 | ܁& |  |
| 194 | 1.3.4.2.3 | Aluminum Louvers | 6d | 2011-10-24 | 2011-10-30 | 193FS+2d |  |  | 46.5d |  |  | Miscelaneous Labor | 48h |  |  | ܁4 | ܁& |  |
| 195 | 1.3.4.2.4 | Aluminum windows | 8d | 2011-10-22 | 2011-10-30 | 193 |  |  | 46.5d |  |  | Miscelaneous Labor [500%] | 320h |  | 105,000 | ܁4 | ܁& |  |
| 196 | 1.3.4.2.5 | Glazed Aluminum curtain walls | 10d | 2011-10-20 | 2011-10-31 | 193FS-1d, 33FS+4d |  |  | 0d |  |  | Miscelaneous Labor [250%] | 200h |  | 286,000 | ܁4 | ܁& |  |
| 197 | 1.3.4.2.6 | Marble skirting | 5d | 2011-10-22 | 2011-10-26 | 193 |  |  | 49.5d |  |  | Tiler | 40h |  | 2,000 | ܁4 | ܁& |  |
| 198 | 1.3.4.2.7 | Dry Mix Finishing for Facades | 12d | 2011-10-18 | 2011-10-31 | 193SS+12d |  |  | 45.5d | 0d |  | Plaster [550%] | 528h |  | 45,000 | ܁4 | ܁& |  |
| 199 | 1.3.4.2.8 | Steel logo for Dabur | 3d | 2011-10-29 | 2011-10-31 | 198FF |  |  | 45.5d |  |  | Miscelaneous Labor [200%] | 48h |  | 75,600 | ܁4 | ܁& |  |
| 200 | 1.3.5 | **Final storage warehouse (stage 5 )** | 65d | 2011-09-24 | 2011-12-14 |  |  |  | 13.5d |  |  |  | 4624h |  | 702,500 | ܁; | ܁& | ܁$ |
| 201 | 1.3.5.1 | **Internal** | 65d | 2011-09-24 | 2011-12-14 |  |  |  | 13.5d |  |  |  | 3024h |  | 261,500 |  | ܁& |  |
| 202 | 3.6.7.3 | Masonry [GR](all levels) | 31d | 2011-05-25 A | 2011-09-28 |  | 40% | 18.6d | 6.2d | 0.53d |  |  | 2604h | 1041.6h | 141,647.73 |  |  |  |
| 203 | 1.3.5.1.2 | MEP works (by others) walls | 8d | 2011-09-24 | 2011-10-02 | 202FS-5d |  |  | 21.5d | 0d | start no earlier than 2011-09-23 |  |  |  |  |  | ܁& |  |
| 204 | 1.3.5.1.3 | Internal plaster for walls | 30d | 2011-10-11 | 2011-11-21 | 5FS+76d, 203FF+29d |  |  | 13.5d | 0d |  | Plaster [733.3%] | 1760h |  | 84,000 |  | ܁& |  |
| 205 | 1.3.5.1.4 | Internal paints | 20d | 2011-11-22 | 2011-12-14 | 204 |  |  | 13.5d |  |  | Painter [700%] | 1120h |  | 106,000 |  | ܁& |  |
| 206 | 1.3.5.1.5 | Steel stair case for final Goods warehouse | 10d | 2011-11-22 | 2011-12-03 | 204 |  |  | 23.5d |  |  | Miscelaneous Labor | 80h |  | 63,000 |  | ܁& |  |
| 207 | 1.3.5.1.6 | Steel Doors | 8d | 2011-11-22 | 2011-11-30 | 204, 17FS+30d |  |  | 25.5d |  |  | Miscelaneous Labor | 64h |  | 8,500 |  | ܁& |  |
| 208 | 1.3.5.2 | **Façades** | 33d | 2011-09-24 | 2011-10-31 |  |  |  | 45.5d |  |  |  | 1600h |  | 441,000 | ܁5 | ܁& |  |
| 209 | 1.3.5.2.1 | MEP works (by others) | 10d | 2011-09-24 | 2011-10-04 | 203SS, 202SS+7d |  |  | 45.5d | 0d | start no earlier than 2011-09-23 |  |  |  |  | ܁5 | ܁& |  |
| 210 | 1.3.5.2.2 | External plaster for facades | 20d | 2011-10-05 | 2011-10-27 | 209FF+20d, 37 |  |  | 45.5d | 0d |  | Plaster [440%] | 704h |  | 48,000 | ܁5 | ܁& |  |
| 211 | 1.3.5.2.3 | Aluminum Louvers | 6d | 2011-10-11 | 2011-10-17 | 210SS+5d |  |  | 57.5d |  |  | Miscelaneous Labor | 48h |  |  | ܁5 | ܁& |  |
| 212 | 1.3.5.2.4 | Aluminum windows | 8d | 2011-10-11 | 2011-10-19 | 210SS+5d |  |  | 55.5d |  |  | Miscelaneous Labor [325%] | 208h |  | 65,000 | ܁5 | ܁& |  |
| 213 | 1.3.5.2.5 | Glazed Aluminum curtain walls | 10d | 2011-10-20 | 2011-10-31 | 210SS+5d, 33FS+10d |  |  | 45.5d |  |  | Miscelaneous Labor [200%] | 160h |  | 285,500 | ܁5 | ܁& |  |
| 214 | 1.3.5.2.6 | Marble skirting | 5d | 2011-10-26 | 2011-10-31 | 210FS-2d |  |  | 45.5d |  |  | Tiler | 40h |  | 5,000 | ܁5 | ܁& |  |
| 215 | 1.3.5.2.7 | Dry Mix Finishing for Facades | 12d | 2011-10-18 | 2011-10-31 | 210SS+11d |  |  | 45.5d |  |  | Plaster [458.3%] | 440h |  | 37,500 | ܁5 | ܁& |  |

| ID | WBS | Task | Duration | Start | Finish | Predecessors | Total slack | Free slack | Constraint | Resources | Work | Cost | Building | Text2 | Text3 |
| --- | --- | --- | --- | --- | --- | --- | --- | --- | --- | --- | --- | --- | --- | --- | --- |
| 216 | 1.3.6 | **Utilities Building N:1(water tank+Boiler +Pump room)** | 175.18d | 2011-05-10 | 2011-12-13 |  | 15.32d |  |  |  | 1281.33h | 156,116 | ܁ | ܁$ | ܁& |
| 217 | 1.3.6.1 | **Roof Floor** | 151.18d | 2011-05-10 | 2011-11-15 |  | 39.33d |  |  |  | 164h | 37,496 | ܁ |  | ܁& |
| 218 | 1.3.6.1.1 | MEP works (by others) | 3d | 2011-10-26 | 2011-10-30 | 224SS+4d | 39.33d | 0d |  |  |  |  | ܁ |  | ܁& |
| 219 | 1.3.6.1.2 | water proofing membrane for roofs | 3d | 2011-10-16 | 2011-10-18 | 5FS+80d, 221 | 28.5d | 5.17d |  | Miscelaneous Labor [166.7%] | 40h | 8,772 | ܁ |  | ܁& |
| 220 | 1.3.6.1.3 | Plain concrete screed 5cm | 2d | 2011-10-31 | 2011-11-02 | 219FS+5d, 218FF+3d | 39.33d | 0d |  | Miscelaneous Labor | 16h | 12,556 | ܁ |  | ܁& |
| 221 | 1.3.6.1.4 | sloping plain concrete for roofs | 3d | 2011-05-10 | 2011-05-12 |  | 156.5d | 128d |  | Miscelaneous Labor [200%] | 48h | 5,676 | ܁ |  | ܁& |
| 222 | 1.3.6.1.5 | Gravel layers | 5d | 2011-11-02 | 2011-11-15 | 220 | 39.33d |  |  | Tiler [150%] | 60h | 10,492 | ܁ |  | ܁& |
| 223 | 1.3.6.2 | **Ground Floor** | 28d | 2011-10-30 | 2011-12-08 |  | 15.32d |  |  |  | 613.33h | 87,050 | ܁ |  | ܁& |
| 224 | 4.3 | Masonry Block Walls | 12d | 2011-10-22 | 2011-11-02 |  | 0d |  |  |  | 604.8h | 52,280 |  |  |  |
| 225 | 1.3.6.2.2 | MEP works (by others) | 7d | 2011-10-30 | 2011-11-14 | 224SS+7d | 15.32d | 0d |  |  |  |  | ܁ |  | ܁& |
| 226 | 1.3.6.2.3 | Internal plaster for walls and ceilings | 10d | 2011-11-14 | 2011-11-26 | 219FS+3d, 225FF+10d | 15.32d | 0d |  | Plaster [306.7%] | 245.33h | 17,556 | ܁ |  | ܁& |
| 227 | 1.3.6.2.4 | Steel light structure roof for boiler | 3d | 2011-11-26 | 2011-11-29 | 226 | 19.32d | 0d |  | Miscelaneous Labor [200%] | 48h | 25,666 | ܁ |  | ܁& |
| 228 | 1.3.6.2.5 | Internal paints for walls and ceilings final coat | 8d | 2011-11-29 | 2011-12-08 | 227 | 19.32d |  |  | Painter [375%] | 240h | 17,094 | ܁ |  | ܁& |
| 229 | 1.3.6.2.6 | Granite for stairs | 3d | 2011-11-29 | 2011-12-03 | 227 | 19.32d | 0d |  | Tiler | 24h | 1,750 | ܁ |  | ܁& |
| 230 | 1.3.6.2.7 | steel Ladder | 2d | 2011-12-03 | 2011-12-05 | 227, 229 | 19.32d | 0d |  | Miscelaneous Labor [200%] | 32h | 15,000 | ܁ |  | ܁& |
| 231 | 1.3.6.2.8 | Steel Doors | 3d | 2011-12-05 | 2011-12-08 | 230 | 19.32d |  |  | Miscelaneous Labor | 24h | 9,984 | ܁ |  | ܁& |
| 232 | 1.3.6.3 | **Façades** | 26d | 2011-11-13 | 2011-12-13 |  | 15.32d |  |  |  | 504h | 31,570 | ܁ |  | ܁& |
| 233 | 1.3.6.3.1 | MEP works (by others) | 3d | 2011-11-13 | 2011-11-16 | 224SS+13d | 23.32d | 8d |  |  |  |  | ܁ |  | ܁& |
| 234 | 1.3.6.3.2 | External plaster for facades | 8d | 2011-11-26 | 2011-12-05 | 233FF+8d, 226 | 15.32d | 0d |  | Plaster [525%] | 336h | 17,630 | ܁ |  | ܁& |
| 235 | 1.3.6.3.3 | Dry Mix Finishing for Facades | 7d | 2011-12-05 | 2011-12-13 | 234 | 15.32d |  |  | Plaster [300%] | 168h | 13,940 | ܁ |  | ܁& |
| 236 | 1.3.7 | **Utilities Building N:2 (Electrical room)** | 34d | 2011-09-24 | 2011-11-01 |  | 44.5d |  |  |  | 907.2h | 145,633 | ܁! | ܁$ | ܁& |
| 237 | 1.3.7.1 | **Façades** | 28d | 2011-09-24 | 2011-10-25 |  | 50.5d |  |  |  | 360h | 21,584 | ܁! |  | ܁& |
| 238 | 1.3.7.1.1 | MEP works (by others) | 2d | 2011-09-24 | 2011-09-25 | 249SS+25d | 50.5d | 0d | start no earlier than 2011-09-23 |  |  |  | ܁! |  | ܁& |
| 239 | 1.3.7.1.2 | External plaster for facades | 10d | 2011-09-26 | 2011-10-06 | 238FF+10d | 50.5d | 0d | start no earlier than 2011-09-23 | Plaster [250%] | 200h | 10,332 | ܁! |  | ܁& |
| 240 | 1.3.7.1.3 | Bazalt skirting | 8d | 2011-10-08 | 2011-10-16 | 239 | 50.5d | 0d | start no earlier than 2011-09-23 | Tiler | 64h | 2,888 | ܁! |  | ܁& |
| 241 | 1.3.7.1.4 | Dry Mix Finishing for Facades | 8d | 2011-10-17 | 2011-10-25 | 239, 240 | 50.5d |  | start no earlier than 2011-09-23 | Plaster [150%] | 96h | 8,364 | ܁! |  | ܁& |

| ID | WBS | Task | Duration | Start | Finish | Predecessors | Complete | Total slack | Free slack | Constraint | Resources | Work | Actual work | Cost | Building | Text3 | Text2 |
| --- | --- | --- | --- | --- | --- | --- | --- | --- | --- | --- | --- | --- | --- | --- | --- | --- | --- |
| 242 | 1.3.7.2 | **Roof Floor** | 16d | 2011-09-24 | 2011-10-11 |  |  | 44.5d |  |  |  | 139.2h |  | 28,024 | ܁! | ܁& |  |
| 243 | 1.3.7.2.1 | MEP works (by others) | 4d | 2011-09-24 | 2011-09-27 | 249SS+25d |  | 44.5d | 0d | start no earlier than 2011-09-23 |  |  |  |  | ܁! | ܁& |  |
| 244 | 1.3.7.2.2 | water proofing membrane for roofs | 3d | 2011-10-02 | 2011-10-04 | 5FS+40d, 246 |  | 44.5d | 0d | start no earlier than 2011-09-23 | Miscelaneous Labor [200%] | 48h |  | 6,324 | ܁! | ܁& |  |
| 245 | 1.3.7.2.3 | Plain concrete screed 5cm | 2d | 2011-10-05 | 2011-10-06 | 244 |  | 62.5d | 0d | start no earlier than 2011-09-23 | Miscelaneous Labor | 16h |  | 9,052 | ܁! | ܁& |  |
| 246 | 1.3.7.2.4 | sloping plain concrete for roofs | 3d | 2011-09-28 | 2011-10-01 | 243FF+3d |  | 44.5d | 0d | start no earlier than 2011-09-23 | Miscelaneous Labor | 24h |  | 4,092 | ܁! | ܁& |  |
| 247 | 1.3.7.2.5 | Gravel layers | 4d | 2011-10-08 | 2011-10-11 | 245 |  | 62.5d |  | start no earlier than 2011-09-23 | Tiler [160%] | 51.2h |  | 8,556 | ܁! | ܁& |  |
| 248 | 1.3.7.3 | **Ground Floor** | 34d | 2011-09-24 | 2011-11-01 |  |  | 44.5d |  |  |  | 408h |  | 96,025 | ܁! | ܁& |  |
| 249 | 5.3 | Masonry Block Walls | 6d | 2011-05-26 A | 2011-06-01 A |  | 100% |  |  |  |  | 201.6h | 201.6h | 58,216 |  |  |  |
| 250 | 1.3.7.3.2 | MEP works (by others) | 6d | 2011-09-24 | 2011-09-29 | 249SS+25d |  | 51.5d | 7d | start no earlier than 2011-09-23 |  |  |  |  | ܁! | ܁& |  |
| 251 | 1.3.7.3.3 | Internal plaster for walls and ceilings | 6d | 2011-10-17 | 2011-10-23 | 244FS+10d, 250FF+13d |  | 44.5d | 0d | start no earlier than 2011-09-23 | Plaster [333.3%] | 160h |  | 17,945 | ܁! | ܁& |  |
| 252 | 1.3.7.3.4 | Internal paints for walls and ceilings final coat | 6d | 2011-10-24 | 2011-10-30 | 251 |  | 44.5d | 0d | start no earlier than 2011-09-23 | Painter [400%] | 192h |  | 20,812 | ܁! | ܁& |  |
| 253 | 1.3.7.3.5 | Granite for stairs | 2d | 2011-10-31 | 2011-11-01 | 252 |  | 44.5d |  | start no earlier than 2011-09-23 | Tiler | 16h |  |  | ܁! | ܁& |  |
| 254 | 1.3.7.3.6 | wooden doors | 2d | 2011-10-31 | 2011-11-01 | 252 |  | 44.5d |  | start no earlier than 2011-09-23 | Miscelaneous Labor | 16h |  | 2,268 | ܁! | ܁& |  |
| 255 | 1.3.7.3.7 | Steel Doors and windows | 3d | 2011-10-08 | 2011-10-10 | 239 |  | 63.5d |  | start no earlier than 2011-09-23 | Miscelaneous Labor | 24h |  | 55,000 | ܁! | ܁& |  |
| 256 | 1.3.8 | **Security rooms** | 53d | 2011-09-24 | 2011-11-30 |  |  | 25.5d |  |  |  | 365.33h |  | 54,108 | ܁" | ܁& | ܁$ |
| 257 | 1.3.8.1 | **Ground Floor** | 53d | 2011-09-24 | 2011-11-30 |  |  | 25.5d |  |  |  | 192h |  | 37,050 | ܁" | ܁& |  |
| 258 | 1.3.8.1.1 | MEP works (by others) | 4d | 2011-09-24 | 2011-09-27 | 273SS+45d |  | 48.5d | 20d | start no earlier than 2011-09-23 |  |  |  |  | ܁" | ܁& |  |
| 259 | 1.3.8.1.2 | Internal plaster for walls and ceilings | 6d | 2011-10-30 | 2011-11-12 | 268FS+20d, 258FF+10d |  | 25.5d | 0d | start no earlier than 2011-09-23 | Plaster | 48h |  | 4,674 | ܁" | ܁& |  |
| 260 | 1.3.8.1.3 | Ceramic floor tiles and skirting | 3d | 2011-11-13 | 2011-11-15 | 259, 13FS+8d |  | 25.5d | 0d | start no earlier than 2011-09-23 | Tiler | 24h |  | 5,671 | ܁" | ܁& |  |
| 261 | 1.3.8.1.4 | Terrazo tiles and skirting | 3d | 2011-11-16 | 2011-11-19 | 260 |  | 25.5d | 0d | start no earlier than 2011-09-23 | Tiler | 24h |  | 1,890 | ܁" | ܁& |  |
| 262 | 1.3.8.1.5 | Granite for stairs | 3d | 2011-11-20 | 2011-11-22 | 261 |  | 25.5d | 0d | start no earlier than 2011-09-23 | Tiler | 24h |  | 708 | ܁" | ܁& |  |
| 263 | 1.3.8.1.6 | Internal paints for walls and ceilings final coat | 4d | 2011-11-23 | 2011-11-27 | 261, 262 |  | 25.5d | 0d | start no earlier than 2011-09-23 | Painter | 32h |  | 4,797 | ܁" | ܁& |  |
| 264 | 1.3.8.1.7 | Aluminum windows | 3d | 2011-11-28 | 2011-11-30 | 263 |  | 25.5d |  | start no earlier than 2011-09-23 | Miscelaneous Labor | 24h |  | 9,950 | ܁" | ܁& |  |
| 265 | 1.3.8.1.8 | wooden doors | 2d | 2011-11-28 | 2011-11-29 | 263 |  | 26.5d |  | start no earlier than 2011-09-23 | Miscelaneous Labor | 16h |  | 9,360 | ܁" | ܁& |  |

| ID | WBS | Task | Type | Duration | Start | Finish | Predecessors | Complete | Remaining | Total slack | Free slack | Constraint | Resources | Work | Actual work | Cost | Actual cost | Building | Text3 | Text2 |
| --- | --- | --- | --- | --- | --- | --- | --- | --- | --- | --- | --- | --- | --- | --- | --- | --- | --- | --- | --- | --- |
| 266 | 1.3.8.2 | **Roof Floor** |  | 17d | 2011-09-24 | 2011-10-12 |  |  |  | 25.5d |  |  |  | 96h |  | 5,568 |  | ܁" | ܁& |  |
| 267 | 1.3.8.2.1 | MEP works (by others) |  | 5d | 2011-09-24 | 2011-09-28 | 273SS+30d |  |  | 25.5d | 0d | start no earlier than 2011-09-23 |  |  |  |  |  | ܁" | ܁& |  |
| 268 | 1.3.8.2.2 | water proofing membrane for roofs |  | 3d | 2011-10-03 | 2011-10-05 | 5FS+30d, 270 |  |  | 25.5d | 0d | start no earlier than 2011-09-23 | Miscelaneous Labor | 24h |  | 1,224 |  | ܁" | ܁& |  |
| 269 | 1.3.8.2.3 | Plain concrete screed 5cm |  | 3d | 2011-10-06 | 2011-10-09 | 268 |  |  | 61.5d | 0d | start no earlier than 2011-09-23 | Miscelaneous Labor | 24h |  | 1,752 |  | ܁" | ܁& |  |
| 270 | 1.3.8.2.4 | sloping plain concrete for roofs |  | 3d | 2011-09-29 | 2011-10-02 | 267FF+3d |  |  | 25.5d | 0d | start no earlier than 2011-09-23 | Miscelaneous Labor | 24h |  | 792 |  | ܁" | ܁& |  |
| 271 | 1.3.8.2.5 | Gravel layers |  | 3d | 2011-10-10 | 2011-10-12 | 269 |  |  | 61.5d |  | start no earlier than 2011-09-23 | Tiler | 24h |  | 1,800 |  | ܁" | ܁& |  |
| 272 | 1.3.8.3 | **Façades** |  | 13d | 2011-09-24 | 2011-10-08 |  |  |  | 65.5d |  |  |  | 77.33h |  | 11,490 |  | ܁" | ܁& |  |
| 273 | 6.2 | Masonry Block Walls |  | 12d | 2011-05-18 A | 2011-05-30 A |  | 100% |  |  |  |  |  | 352.8h | 352.8h | 28,680 |  |  |  |  |
| 274 | 1.3.8.3.2 | MEP works (by others) |  | 4d | 2011-09-24 | 2011-09-27 | 273SS+30d |  |  | 65.5d | 0d | start no earlier than 2011-09-23 |  |  |  |  |  | ܁" | ܁& |  |
| 275 | 1.3.8.3.3 | External plaster for facades |  | 4d | 2011-09-28 | 2011-10-02 | 274FF+4d |  |  | 65.5d | 0d | start no earlier than 2011-09-23 | Plaster [116.7%] | 37.33h |  | 5,934 |  | ܁" | ܁& |  |
| 276 | 1.3.8.3.4 | Bazalt skirting |  | 2d | 2011-10-03 | 2011-10-04 | 275 |  |  | 65.5d | 0d | start no earlier than 2011-09-23 | Tiler | 16h |  | 864 |  | ܁" | ܁& |  |
| 277 | 1.3.8.3.5 | Dry Mix Finishing for Facades |  | 3d | 2011-10-05 | 2011-10-08 | 275, 276 |  |  | 65.5d |  | start no earlier than 2011-09-23 | Plaster | 24h |  | 4,692 |  | ܁" | ܁& |  |
| 278 | 1.3.9 | **External Fences** |  | 161.5d | 2011-06-13 A | 2011-12-31 |  | 20% | 129.12d | 0d |  |  |  | 4760h | 1520h | 298,260 | 81,270 | ܁# | ܁& | ܁$ |
| 279 | 1.3.9.1 | **Façades** |  | 161.5d | 2011-06-13 A | 2011-12-31 |  | 20% | 129.12d | 0d |  |  |  | 4760h | 1520h | 298,260 | 81,270 | ܁# | ܁& |  |
| 280 | 1.3.9.1.1 | External plaster for Fences |  | 85d | 2011-06-13 A | 2011-10-01 | 5FS+25d | 50% | 42.5d | 0d |  |  | Plaster [447.1%] | 3040h | 1520h | 162,540 | 81,270 | ܁# | ܁& |  |
| 281 | 1.3.9.1.2 | Bazalt skirting |  | 65d | 2011-10-01 | 2011-12-22 | 280 |  |  | 0d |  |  | Tiler [53.8%] | 280h |  | 7,200 |  | ܁# | ܁& |  |
| 282 | 1.3.9.1.3 | Dry Mix Finishing for Fences |  | 62d | 2011-10-12 | 2011-12-31 | 281SS+10d |  |  | 0d |  | start no earlier than 2011-09-23 | Plaster [290.3%] | 1440h |  | 128,520 |  | ܁# | ܁& |  |
| 283 | 1.3.10 | **stage 1 second&facades** |  | 79d | 2011-07-30 A | 2011-11-12 |  | 18% | 64.58d | 41.5d |  |  |  | 4167.33h |  | 779,668 |  |  |  |  |
| 284 | 1.3.10.1 | **second floor(ADDITIONAL)** |  | 44d | 2011-07-30 A | 2011-09-25 |  | 90% | 4.4d | 18d |  |  |  |  |  |  |  | ܁< |  |  |
| 285 | 1.3.10.1.1 | concrete slab(wp1)(additional) | milestone | 0d | 2011-07-30 A | 2011-07-30 A |  | 100% |  |  |  | start no earlier than 2011-08-03 |  |  |  |  |  | ܁< |  |  |
| 286 | 1.3.10.1.2 | external masonry(wp1) |  | 20d | 2011-08-10 A | 2011-09-25 | 285 | 90% | 2d | 18d | 0d |  |  |  |  |  |  | ܁< |  |  |
| 287 | 1.3.10.2 | **Roof Floor** |  | 63d | 2011-08-10 A | 2011-10-27 |  | 14% | 54d | 48.5d |  |  |  | 717.33h |  | 218,000 |  | ܁= | ܁& |  |
| 288 | 1.3.10.2.1 | roof masonry(wp1) |  | 5d | 2011-08-10 A | 2011-08-15 A | 285FS+6d | 100% |  |  |  |  |  |  |  |  |  | ܁= |  |  |
| 289 | 1.3.10.2.2 | MEP works (by others) |  | 3d | 2011-09-24 | 2011-09-26 | 288 |  |  | 49.5d | 1d | start no earlier than 2011-09-23 |  |  |  |  |  | ܁= | ܁& |  |
| 290 | 1.3.10.2.3 | water proofing membrane for roofs |  | 4d | 2011-10-03 | 2011-10-06 | 5, 29, 292 |  |  | 48.5d | 0d | start no earlier than 2011-09-23 | Miscelaneous Labor [875%] | 280h |  | 51,000 |  | ܁= | ܁& |  |
| 291 | 1.3.10.2.4 | Plain concrete screed 5cm |  | 6d | 2011-10-11 | 2011-10-17 | 290FS+3d |  |  | 48.5d | 0d | start no earlier than 2011-09-23 | Miscelaneous Labor [300%] | 144h |  | 73,000 |  | ܁= | ܁& |  |
| 292 | 1.3.10.2.5 | sloping plain concrete for roofs |  | 8d | 2011-09-24 | 2011-10-02 | 289FF+4d |  |  | 48.5d | 0d | start no earlier than 2011-09-23 | Miscelaneous Labor [150%] | 96h |  | 33,000 |  | ܁= | ܁& |  |
| 293 | 1.3.10.2.6 | Gravel layers |  | 5d | 2011-10-18 | 2011-10-23 | 291 |  |  | 48.5d | 0d | start no earlier than 2011-09-23 | Tiler [453.3%] | 181.33h |  | 61,000 |  | ܁= | ܁& |  |
| 294 | 1.3.10.2.7 | Steel cover for Ducts |  | 4d | 2011-10-24 | 2011-10-27 | 293 |  |  | 48.5d |  |  | Miscelaneous Labor [50%] | 16h |  |  |  | ܁= | ܁& |  |

| ID | WBS | Task | Duration | Start | Finish | Predecessors | Total slack | Constraint | Resources | Work | Cost | Building | Text3 |
| --- | --- | --- | --- | --- | --- | --- | --- | --- | --- | --- | --- | --- | --- |
| 295 | 1.3.10.3 | **Façades** | 35d | 2011-09-26 | 2011-11-12 |  | 0d |  |  | 3450h | 561,668 | ܁> | ܁& |
| 296 | 1.3.10.3.1 | MEP works (by others) | 3d | 2011-09-26 | 2011-09-28 | 286 | 18d | start no earlier than 2011-09-23 |  |  | 5,000 | ܁> | ܁& |
| 297 | 1.3.10.3.2 | External plaster for facades | 20d | 2011-09-29 | 2011-10-22 | 296FF+2d, 37FS+6d, 286SS+20d | 0d |  | Plaster [1000%] | 1600h | 96,668 | ܁> | ܁& |
| 298 | 1.3.10.3.3 | Aluminum Louvers | 2d | 2011-10-23 | 2011-10-24 | 297SS+20d | 10d |  | Miscelaneous Labor | 16h | 5,000 | ܁> | ܁& |
| 299 | 1.3.10.3.4 | Aluminum windows | 8d | 2011-10-23 | 2011-10-31 | 297SS+20d | 4d |  | Miscelaneous Labor [250%] | 160h | 50,000 | ܁> | ܁& |
| 300 | 1.3.10.3.5 | Glazed Aluminum curtain walls | 15d | 2011-10-15 | 2011-10-31 | 297SS+5d, 33FS+5d | 4d |  | Miscelaneous Labor [300%] | 360h | 310,000 | ܁> | ܁& |
| 301 | 1.3.10.3.6 | Marble skirting | 8d | 2011-10-23 | 2011-10-31 | 297SS+20d | 4d |  | Tiler | 64h | 10,000 | ܁> | ܁& |
| 302 | 1.3.10.3.7 | Dry Mix Finishing for Facades | 15d | 2011-10-19 | 2011-11-12 | 297SS+17d | 0d |  | Plaster [1041.7%] | 1250h | 85,000 | ܁> | ܁& |
