# final mechanical mostafa modified

Schedule from MS Project, 2011-01-08 to 2011-07-30, status date 2011-04-05, A marks actual dates.
Watania For Trading & Contracting

## Calendars

- Standard: Mon-Thu 08:00-12:00, 13:00-17:00; Fri off; Sat-Sun 08:00-12:00, 13:00-17:00.

## Schedule

| ID | WBS | Task | Duration | Start | Finish | Complete | Remaining | Baseline start | Baseline finish | Baseline duration | Total slack | Free slack | Constraint |
| --- | --- | --- | --- | --- | --- | --- | --- | --- | --- | --- | --- | --- | --- |
| 1 | 1 | **Mechanical work** | 175d? | 2011-01-08 A | 2011-07-30 | 18% | 142.99d? | 2011-01-08 | 2011-07-30 | 175d? | 0d |  |  |
| 2 | 1.1 | **submitals preparatioin of HVAC** | 33d | 2011-01-08 A | 2011-02-14 | 81% | 6.12d | 2011-01-08 | 2011-02-14 | 33d | 142d |  |  |
| 3 | 1.1.1 | Black steel pipe schedule 40 | 3d | 2011-01-08 A | 2011-01-10 A | 100% |  | 2011-01-08 | 2011-01-10 | 3d |  |  | start no earlier than 2011-01-08 |
| 16 | 1.1.2 | pipes , duct insulation & cladding | 3d | 2011-01-17 A | 2011-01-19 A | 100% |  | 2011-01-17 | 2011-01-19 | 3d |  |  | start no earlier than 2011-01-17 |
| 4 | 1.1.3 | duct work | 3d | 2011-01-08 A | 2011-01-10 A | 100% |  | 2011-01-08 | 2011-01-10 | 3d |  |  | start no earlier than 2011-01-08 |
| 17 | 1.1.4 | valves (gate & balancing) | 3d | 2011-01-17 A | 2011-01-19 A | 100% |  | 2011-01-17 | 2011-01-19 | 3d |  |  | start no earlier than 2011-01-17 |
| 18 | 1.1.5 | fan coil unit | 3d | 2011-01-17 A | 2011-01-19 A | 100% |  | 2011-01-17 | 2011-01-19 | 3d |  |  | start no earlier than 2011-01-17 |
| 22 | 1.1.6 | split unit | 3d | 2011-02-12 | 2011-02-14 |  |  | 2011-02-12 | 2011-02-14 | 3d | 142d |  | start no earlier than 2011-02-12 |
| 5 | 1.1.7 | volume damper and fire damper | 3d | 2011-01-08 A | 2011-01-10 A | 100% |  | 2011-01-08 | 2011-01-10 | 3d |  |  | start no earlier than 2011-01-08 |
| 19 | 1.1.8 | air curtian | 3d | 2011-01-17 A | 2011-01-19 A | 100% |  | 2011-01-17 | 2011-01-19 | 3d |  |  | start no earlier than 2011-01-17 |
| 6 | 1.1.9 | centrifugal fans, roof top fans and axial fans | 17d | 2011-01-08 A | 2011-01-26 A | 100% |  | 2011-01-08 | 2011-01-26 | 17d |  |  | finish no earlier than 2011-01-26 |
| 7 | 1.1.10 | Air outlet and door grill | 26d | 2011-01-08 | 2011-02-06 |  |  | 2011-01-08 | 2011-02-06 | 26d | 78d | 0d | finish no earlier than 2011-02-06 |
| 8 | 1.1.11 | Textille duct | 17d | 2011-01-08 A | 2011-01-26 A | 100% |  | 2011-01-08 | 2011-01-26 | 17d |  |  | finish no earlier than 2011-01-26 |
| 9 | 1.1.12 | Air handling unit | 11d | 2011-01-08 A | 2011-01-19 A | 100% |  | 2011-01-08 | 2011-01-19 | 11d |  |  | finish no earlier than 2011-01-19 |
| 10 | 1.1.13 | Expasion tank | 11d | 2011-01-08 A | 2011-01-19 A | 100% |  | 2011-01-08 | 2011-01-19 | 11d |  |  | finish no earlier than 2011-01-19 |
| 11 | 1.1.14 | Air sepertor | 11d | 2011-01-08 A | 2011-01-19 A | 100% |  | 2011-01-08 | 2011-01-19 | 11d |  |  | finish no earlier than 2011-01-19 |
| 12 | 1.1.15 | chilled water pumps & cooling water pump | 11d | 2011-01-08 A | 2011-01-19 A | 100% |  | 2011-01-08 | 2011-01-19 | 11d |  |  | finish no earlier than 2011-01-19 |
| 13 | 1.1.16 | Absorption chiller | 3d | 2011-01-08 A | 2011-01-10 A | 100% |  | 2011-01-08 | 2011-01-10 | 3d |  |  | finish no earlier than 2011-01-10 |
| 14 | 1.1.17 | Cooling tower | 11d | 2011-01-08 A | 2011-01-19 A | 100% |  | 2011-01-08 | 2011-01-19 | 11d |  |  | finish no earlier than 2011-01-19 |
| 15 | 1.1.18 | DDC control | 26d | 2011-01-08 A | 2011-02-06 A | 100% |  | 2011-01-08 | 2011-02-06 | 26d |  |  | finish no earlier than 2011-02-06 |
| 21 | 1.1.19 | Insect killer | 3d | 2011-02-10 A | 2011-02-13 A | 100% |  | 2011-02-10 | 2011-02-13 | 3d |  |  | start no earlier than 2011-02-10 |
| 20 | 1.1.20 | upvc pipes | 3d | 2011-01-23 | 2011-01-25 |  |  | 2011-01-23 | 2011-01-26 | 4d | 159d |  | start no earlier than 2011-01-23 |
| 23 | 1.1.21 | water tretment | 2d | 2011-02-12 A | 2011-02-13 A | 100% |  | 2011-02-12 | 2011-02-13 | 2d |  |  | start no earlier than 2011-02-12 |
| 24 | 1.1.22 | test and balance | 2d | 2011-02-12 A | 2011-02-13 | 50% | 1d | 2011-02-12 | 2011-02-13 | 2d | 142d | 0d | start no earlier than 2011-02-12 |

| ID | WBS | Task | Duration | Start | Finish | Complete | Remaining | Baseline start | Baseline finish | Baseline duration | Total slack | Free slack | Constraint |
| --- | --- | --- | --- | --- | --- | --- | --- | --- | --- | --- | --- | --- | --- |
| 25 | 1.2 | **submitals preparatioin of PLUMBING&UTILITES and fire fighting** | 26d | 2011-01-08 A | 2011-02-06 | 92% | 2.17d | 2011-01-08 | 2011-02-06 | 26d | 147d |  |  |
| 26 | 1.2.1 | Black steel pipe schedule 40 | 3d | 2011-01-08 A | 2011-01-10 A | 100% |  | 2011-01-08 | 2011-01-10 | 3d |  |  | start no earlier than 2011-01-08 |
| 27 | 1.2.2 | gate valve | 3d | 2011-01-08 A | 2011-01-10 A | 100% |  | 2011-01-08 | 2011-01-10 | 3d |  |  | start no earlier than 2011-01-08 |
| 28 | 1.2.3 | ball and balancing valve | 3d | 2011-01-08 A | 2011-01-10 A | 100% |  | 2011-01-08 | 2011-01-10 | 3d |  |  | start no earlier than 2011-01-08 |
| 30 | 1.2.4 | fire hose cabient and fire extinguishing | 3d | 2011-01-20 A | 2011-01-23 A | 100% |  | 2011-01-20 | 2011-01-23 | 3d |  |  | start no earlier than 2011-01-20 |
| 31 | 1.2.5 | Electrical work | 3d | 2011-01-20 | 2011-01-23 |  |  | 2011-01-20 | 2011-01-23 | 3d | 159d | 0d | start no earlier than 2011-01-20 |
| 32 | 1.2.6 | Siamese connection and fire hydrant | 3d | 2011-01-20 A | 2011-01-23 A | 100% |  | 2011-01-20 | 2011-01-23 | 3d |  |  | start no earlier than 2011-01-20 |
| 33 | 1.2.7 | float valve | 3d | 2011-01-20 A | 2011-01-23 A | 100% |  | 2011-01-20 | 2011-01-23 | 3d |  |  | start no earlier than 2011-01-20 |
| 34 | 1.2.8 | flow meter and totalizer | 3d | 2011-01-20 A | 2011-01-23 A | 100% |  | 2011-01-20 | 2011-01-23 | 3d |  |  | start no earlier than 2011-01-20 |
| 35 | 1.2.9 | sewage and sumpersible pumps | 3d | 2011-01-20 A | 2011-01-23 A | 100% |  | 2011-01-20 | 2011-01-23 | 3d |  |  | start no earlier than 2011-01-20 |
| 36 | 1.2.10 | fire pumps | 3d | 2011-01-20 A | 2011-01-23 A | 100% |  | 2011-01-20 | 2011-01-23 | 3d |  |  | start no earlier than 2011-01-20 |
| 37 | 1.2.11 | booster pumps | 3d | 2011-01-20 A | 2011-01-23 A | 100% |  | 2011-01-20 | 2011-01-23 | 3d |  |  | start no earlier than 2011-01-20 |
| 38 | 1.2.12 | ultra violet sterilizer | 3d | 2011-01-20 | 2011-01-23 |  |  | 2011-01-20 | 2011-01-23 | 3d | 19d | 0d | start no earlier than 2011-01-20 |
| 39 | 1.2.13 | st. steel gate valve | 3d | 2011-01-20 A | 2011-01-23 A | 100% |  | 2011-01-20 | 2011-01-23 | 3d |  |  | start no earlier than 2011-01-20 |
| 29 | 1.2.14 | carbon steel valve | 3d | 2011-01-08 A | 2011-01-10 A | 100% |  | 2011-01-08 | 2011-01-10 | 3d |  |  | start no earlier than 2011-01-08 |
| 40 | 1.2.15 | CIP CLEANING STATION | 3d | 2011-01-20 A | 2011-01-23 A | 100% |  | 2011-01-20 | 2011-01-23 | 3d |  |  | start no earlier than 2011-01-20 |
| 41 | 1.2.16 | Hot water mixer | 3d | 2011-01-20 A | 2011-01-23 A | 100% |  | 2011-01-20 | 2011-01-23 | 3d |  |  | start no earlier than 2011-01-20 |
| 42 | 1.2.17 | water meter | 3d | 2011-01-20 A | 2011-01-23 A | 100% |  | 2011-01-20 | 2011-01-23 | 3d |  |  | start no earlier than 2011-01-20 |
| 43 | 1.2.18 | hot water pumps | 3d | 2011-01-20 A | 2011-01-23 A | 100% |  | 2011-01-20 | 2011-01-23 | 3d |  |  | start no earlier than 2011-01-20 |
| 44 | 1.2.19 | water softener | 3d | 2011-01-20 A | 2011-01-23 A | 100% |  | 2011-01-20 | 2011-01-23 | 3d |  |  | start no earlier than 2011-01-20 |
| 45 | 1.2.20 | st. steel pipes | 3d | 2011-01-20 A | 2011-01-23 A | 100% |  | 2011-01-20 | 2011-01-23 | 3d |  |  | start no earlier than 2011-01-20 |
| 46 | 1.2.21 | CIP PUMPS | 3d | 2011-01-20 A | 2011-01-23 A | 100% |  | 2011-01-20 | 2011-01-23 | 3d |  |  | start no earlier than 2011-01-20 |
| 47 | 1.2.22 | VEGETABLE OIL PUMP | 3d | 2011-02-03 A | 2011-02-06 A | 100% |  | 2011-02-03 | 2011-02-06 | 3d |  |  | finish no earlier than 2011-02-06 |
| 48 | 1.2.23 | OIL TANK | 3d | 2011-02-03 A | 2011-02-06 A | 100% |  | 2011-02-03 | 2011-02-06 | 3d |  |  | finish no earlier than 2011-02-06 |
| 49 | 1.2.24 | heat tracing | 3d | 2011-02-03 A | 2011-02-06 A | 100% |  | 2011-02-03 | 2011-02-06 | 3d |  |  | finish no earlier than 2011-02-06 |

| ID | WBS | Task | Duration | Start | Finish | Predecessors | Complete | Remaining | Baseline start | Baseline finish | Baseline duration | Total slack | Free slack | Constraint |
| --- | --- | --- | --- | --- | --- | --- | --- | --- | --- | --- | --- | --- | --- | --- |
| 210 | 1.3 | **submitals approval (submitals preparatioin of HVAC)** | 28d | 2011-01-16 A | 2011-02-16 |  | 90% | 2.86d | 2011-01-11 | 2011-02-16 | 32d | 140d |  |  |
| 211 | 1.3.1 | Black steel pipe schedule 40 | 2d | 2011-01-16 A | 2011-01-17 A | 3 | 100% |  | 2011-01-16 | 2011-01-17 | 2d |  |  | start no earlier than 2011-01-16 |
| 215 | 1.3.2 | pipes , duct insulation & cladding | 2d | 2011-01-20 A | 2011-01-22 A | 16 | 100% |  | 2011-01-20 | 2011-01-22 | 2d |  |  | start no earlier than 2011-01-16 |
| 212 | 1.3.3 | duct work | 2d | 2011-01-16 A | 2011-01-17 A | 4 | 100% |  | 2011-01-16 | 2011-01-17 | 2d |  |  | start no earlier than 2011-01-16 |
| 216 | 1.3.4 | valves (gate & balancing) | 2d | 2011-01-20 A | 2011-01-22 A | 17 | 100% |  | 2011-01-20 | 2011-01-22 | 2d |  |  | start no earlier than 2011-01-16 |
| 217 | 1.3.5 | fan coil unit | 2d | 2011-01-20 A | 2011-01-22 A | 18 | 100% |  | 2011-01-20 | 2011-01-22 | 2d |  |  | start no earlier than 2011-01-16 |
| 232 | 1.3.6 | split unit | 2d | 2011-02-15 A | 2011-02-16 A | 22 | 100% |  | 2011-02-15 | 2011-02-16 | 2d |  |  | start no earlier than 2011-01-16 |
| 213 | 1.3.7 | volume damper and fire damper | 2d | 2011-01-16 A | 2011-01-17 A | 5 | 100% |  | 2011-01-16 | 2011-01-17 | 2d |  |  | start no earlier than 2011-01-16 |
| 218 | 1.3.8 | air curtian | 2d | 2011-01-20 A | 2011-01-22 A | 19 | 100% |  | 2011-01-20 | 2011-01-22 | 2d |  |  | start no earlier than 2011-01-16 |
| 224 | 1.3.9 | centrifugal fans, roof top fans and axial fans | 2d | 2011-01-27 A | 2011-01-29 | 6 | 50% | 1d | 2011-01-27 | 2011-01-29 | 2d | 57d | 0d | start no earlier than 2011-01-16 |
| 227 | 1.3.10 | Air outlet and door grill | 2d | 2011-02-07 A | 2011-02-08 | 7 | 50% | 1d | 2011-02-07 | 2011-02-08 | 2d | 77d | 0d | start no earlier than 2011-01-16 |
| 225 | 1.3.11 | Textille duct | 2d | 2011-01-27 A | 2011-01-29 | 8 | 50% | 1d | 2011-01-27 | 2011-01-29 | 2d | 72d | 0d | start no earlier than 2011-01-16 |
| 219 | 1.3.12 | Air handling unit | 2d | 2011-01-20 A | 2011-01-22 A | 9 | 100% |  | 2011-01-20 | 2011-01-22 | 2d |  |  | start no earlier than 2011-01-16 |
| 220 | 1.3.13 | Expasion tank | 2d | 2011-01-20 A | 2011-01-22 A | 10 | 100% |  | 2011-01-20 | 2011-01-22 | 2d |  |  | start no earlier than 2011-01-16 |
| 221 | 1.3.14 | Air sepertor | 2d | 2011-01-20 A | 2011-01-22 A | 11 | 100% |  | 2011-01-20 | 2011-01-22 | 2d |  |  | start no earlier than 2011-01-16 |
| 222 | 1.3.15 | chilled water pumps & cooling water pump | 2d | 2011-01-20 A | 2011-01-22 A | 12 | 100% |  | 2011-01-20 | 2011-01-22 | 2d |  |  | start no earlier than 2011-01-16 |
| 214 | 1.3.16 | Absorption chiller | 2d | 2011-01-16 A | 2011-01-17 A | 13 | 100% |  | 2011-01-16 | 2011-01-17 | 2d |  |  | start no earlier than 2011-01-16 |
| 223 | 1.3.17 | Cooling tower | 2d | 2011-01-20 A | 2011-01-22 A | 14 | 100% |  | 2011-01-20 | 2011-01-22 | 2d |  |  | start no earlier than 2011-01-16 |
| 228 | 1.3.18 | DDC control | 2d | 2011-02-07 A | 2011-02-08 A | 15 | 100% |  | 2011-02-07 | 2011-02-08 | 2d |  |  | finish no earlier than 2011-02-06 |
| 229 | 1.3.19 | Insect killer | 2d | 2011-02-14 A | 2011-02-15 A | 21 | 100% |  | 2011-02-14 | 2011-02-15 | 2d |  |  | start no earlier than 2011-02-10 |
| 226 | 1.3.20 | upvc pipes | 2d | 2011-01-26 A | 2011-01-27 A | 20 | 100% |  | 2011-01-27 | 2011-01-29 | 2d |  |  | start no earlier than 2011-01-23 |
| 230 | 1.3.21 | water tretment | 2d | 2011-02-14 A | 2011-02-15 | 23 | 75% | 0.5d | 2011-02-14 | 2011-02-15 | 2d | 141d |  | start no earlier than 2011-02-12 |
| 231 | 1.3.22 | test and balance | 2d | 2011-02-14 A | 2011-02-15 | 24 | 50% | 1d | 2011-02-14 | 2011-02-15 | 2d | 141d |  | start no earlier than 2011-02-12 |
| 233 | 1.4 | **submitals approval (UTILITES and fire fighting)** | 25d | 2011-01-11 A | 2011-02-08 |  | 69% | 7.81d | 2011-01-11 | 2011-02-08 | 25d | 147d |  |  |
| 234 | 1.4.1 | Black steel pipe schedule 40 | 2d | 2011-01-11 A | 2011-01-12 A | 26 | 100% |  | 2011-01-11 | 2011-01-12 | 2d |  |  | start no earlier than 2011-01-08 |
| 235 | 1.4.2 | gate valve | 2d | 2011-01-11 A | 2011-01-12 A | 27 | 100% |  | 2011-01-11 | 2011-01-12 | 2d |  |  | start no earlier than 2011-01-08 |
| 236 | 1.4.3 | ball and balancing valve | 2d | 2011-01-11 A | 2011-01-12 A | 28 | 100% |  | 2011-01-11 | 2011-01-12 | 2d |  |  | start no earlier than 2011-01-08 |
| 238 | 1.4.4 | fire hose cabient and fire extinguishing | 2d | 2011-01-24 A | 2011-01-25 | 30 | 50% | 1d | 2011-01-24 | 2011-01-25 | 2d | 79d | 0d | start no earlier than 2011-01-20 |
| 239 | 1.4.5 | Electrical work | 2d | 2011-01-24 | 2011-01-25 | 31 |  |  | 2011-01-24 | 2011-01-25 | 2d | 159d |  | start no earlier than 2011-01-20 |
| 240 | 1.4.6 | Siamese connection and fire hydrant | 2d | 2011-01-24 A | 2011-01-25 A | 32 | 100% |  | 2011-01-24 | 2011-01-25 | 2d |  |  | start no earlier than 2011-01-20 |
| 241 | 1.4.7 | float valve | 2d | 2011-01-24 A | 2011-01-25 A | 33 | 100% |  | 2011-01-24 | 2011-01-25 | 2d |  |  | start no earlier than 2011-01-20 |
| 242 | 1.4.8 | flow meter and totalizer | 2d | 2011-01-24 A | 2011-01-25 A | 34 | 100% |  | 2011-01-24 | 2011-01-25 | 2d |  |  | start no earlier than 2011-01-20 |
| 243 | 1.4.9 | sewage and sumpersible pumps | 2d | 2011-01-24 A | 2011-01-25 A | 35 | 100% |  | 2011-01-24 | 2011-01-25 | 2d |  |  | start no earlier than 2011-01-20 |
| 244 | 1.4.10 | fire pumps | 2d | 2011-01-24 A | 2011-01-25 A | 36 | 100% |  | 2011-01-24 | 2011-01-25 | 2d |  |  | start no earlier than 2011-01-20 |
| 245 | 1.4.11 | booster pumps | 2d | 2011-01-24 A | 2011-01-25 A | 37 | 100% |  | 2011-01-24 | 2011-01-25 | 2d |  |  | start no earlier than 2011-01-20 |
| 246 | 1.4.12 | ultra violet sterilizer | 2d | 2011-01-24 | 2011-01-25 | 38 |  |  | 2011-01-24 | 2011-01-25 | 2d | 19d | 0d | start no earlier than 2011-01-20 |
| 247 | 1.4.13 | st. steel gate valve | 2d | 2011-01-24 A | 2011-01-25 A | 39 | 100% |  | 2011-01-24 | 2011-01-25 | 2d |  |  | start no earlier than 2011-01-20 |
| 237 | 1.4.14 | carbon steel valve | 2d | 2011-01-11 A | 2011-01-12 A | 29 | 100% |  | 2011-01-11 | 2011-01-12 | 2d |  |  | start no earlier than 2011-01-08 |
| 248 | 1.4.15 | CIP CLEANING STATION | 2d | 2011-01-24 A | 2011-01-25 | 40 | 50% | 1d | 2011-01-24 | 2011-01-25 | 2d | 23d | 0d | start no earlier than 2011-01-20 |
| 249 | 1.4.16 | Hot water mixer | 2d | 2011-01-24 A | 2011-01-25 A | 41 | 100% |  | 2011-01-24 | 2011-01-25 | 2d |  |  | start no earlier than 2011-01-20 |
| 250 | 1.4.17 | water meter | 2d | 2011-01-24 | 2011-01-25 | 42 |  |  | 2011-01-24 | 2011-01-25 | 2d | 159d |  | start no earlier than 2011-01-20 |
| 251 | 1.4.18 | hot water pumps | 2d | 2011-01-24 A | 2011-01-25 | 43 | 50% | 1d | 2011-01-24 | 2011-01-25 | 2d | 84d | 0d | start no earlier than 2011-01-20 |
| 252 | 1.4.19 | water softener | 2d | 2011-01-24 A | 2011-01-25 | 44 | 50% | 1d | 2011-01-24 | 2011-01-25 | 2d | 129d | 0d | start no earlier than 2011-01-20 |
| 253 | 1.4.20 | st. steel pipes | 2d | 2011-01-24 A | 2011-01-25 A | 45 | 100% |  | 2011-01-24 | 2011-01-25 | 2d |  |  | start no earlier than 2011-01-20 |
| 254 | 1.4.21 | CIP PUMPS | 2d | 2011-01-24 A | 2011-01-25 A | 46 | 100% |  | 2011-01-24 | 2011-01-25 | 2d |  |  | start no earlier than 2011-01-20 |
| 255 | 1.4.22 | VEGETABLE OIL PUMP | 2d | 2011-02-07 A | 2011-02-08 | 47 | 50% | 1d | 2011-02-07 | 2011-02-08 | 2d | 58d | 0d | finish no earlier than 2011-02-06 |
| 256 | 1.4.23 | OIL TANK | 2d | 2011-02-07 | 2011-02-08 | 48 |  |  | 2011-02-07 | 2011-02-08 | 2d | 63d | 0d | finish no earlier than 2011-02-06 |
| 257 | 1.4.24 | heat tracing | 2d | 2011-02-07 | 2011-02-08 | 49 |  |  | 2011-02-07 | 2011-02-08 | 2d | 19d | 0d | finish no earlier than 2011-02-06 |

| ID | WBS | Task | Duration | Start | Finish | Complete | Baseline start | Baseline finish | Baseline duration | Constraint |
| --- | --- | --- | --- | --- | --- | --- | --- | --- | --- | --- |
| 186 | 1.5 | **Drawings preparation** | 40d | 2011-01-09 A | 2011-02-23 A | 100% | 2011-01-09 | 2011-02-23 | 40d |  |
| 203 | 1.5.1 | **sales adminstration building** | 10d | 2011-02-01 A | 2011-02-12 A | 100% | 2011-02-01 | 2011-02-12 | 10d |  |
| 204 | 1.5.1.1 | hvac dwg | 10d | 2011-02-01 A | 2011-02-12 A | 100% | 2011-02-01 | 2011-02-12 | 10d | start no earlier than 2011-02-01 |
| 205 | 1.5.1.2 | fire fighting dwq | 10d | 2011-02-01 A | 2011-02-12 A | 100% | 2011-02-01 | 2011-02-12 | 10d | start no earlier than 2011-02-01 |
| 206 | 1.5.2 | **adminstration building** | 10d | 2011-02-13 A | 2011-02-23 A | 100% | 2011-02-13 | 2011-02-23 | 10d |  |
| 207 | 1.5.2.1 | hvac dwg | 10d | 2011-02-13 A | 2011-02-23 A | 100% | 2011-02-13 | 2011-02-23 | 10d | start no earlier than 2011-02-13 |
| 208 | 1.5.2.2 | fire fighting dwq | 10d | 2011-02-13 A | 2011-02-23 A | 100% | 2011-02-13 | 2011-02-23 | 10d | start no earlier than 2011-02-13 |
| 209 | 1.5.2.3 | cold and hot water dwq | 10d | 2011-02-13 A | 2011-02-23 A | 100% | 2011-02-13 | 2011-02-23 | 10d | start no earlier than 2011-02-13 |
| 195 | 1.5.3 | **factroy** | 10d | 2011-01-20 A | 2011-01-31 A | 100% | 2011-01-20 | 2011-01-31 | 10d |  |
| 196 | 1.5.3.1 | hvac dwq | 10d | 2011-01-20 A | 2011-01-31 A | 100% | 2011-01-20 | 2011-01-31 | 10d | start no earlier than 2011-01-20 |
| 197 | 1.5.3.2 | fire fighting dwq | 10d | 2011-01-20 A | 2011-01-31 A | 100% | 2011-01-20 | 2011-01-31 | 10d | start no earlier than 2011-01-20 |
| 198 | 1.5.3.3 | compressed air | 10d | 2011-01-20 A | 2011-01-31 A | 100% | 2011-01-20 | 2011-01-31 | 10d | start no earlier than 2011-01-20 |
| 199 | 1.5.3.4 | hot water | 10d | 2011-01-20 A | 2011-01-31 A | 100% | 2011-01-20 | 2011-01-31 | 10d | start no earlier than 2011-01-20 |
| 200 | 1.5.3.5 | raw water | 10d | 2011-01-20 A | 2011-01-31 A | 100% | 2011-01-20 | 2011-01-31 | 10d | start no earlier than 2011-01-20 |
| 201 | 1.5.3.6 | VEGETABLE OIL | 10d | 2011-01-20 A | 2011-01-31 A | 100% | 2011-01-20 | 2011-01-31 | 10d | start no earlier than 2011-01-20 |
| 202 | 1.5.3.7 | cold water dwq | 10d | 2011-01-20 A | 2011-01-31 A | 100% | 2011-01-20 | 2011-01-31 | 10d | start no earlier than 2011-01-20 |
| 187 | 1.5.4 | **layout** | 33d | 2011-01-09 A | 2011-02-15 A | 100% | 2011-01-09 | 2011-02-15 | 33d |  |
| 188 | 1.5.4.1 | fire fighting dwq | 10d | 2011-01-09 A | 2011-01-19 A | 100% | 2011-01-09 | 2011-01-19 | 10d | finish no earlier than 2011-01-19 |
| 194 | 1.5.4.2 | pump room | 10d | 2011-02-05 A | 2011-02-15 A | 100% | 2011-02-05 | 2011-02-15 | 10d | finish no earlier than 2011-02-15 |
| 189 | 1.5.4.3 | chiller room | 10d | 2011-01-09 A | 2011-01-19 A | 100% | 2011-01-09 | 2011-01-19 | 10d | finish no earlier than 2011-01-19 |
| 190 | 1.5.4.4 | compressor room | 10d | 2011-01-09 A | 2011-01-19 A | 100% | 2011-01-09 | 2011-01-19 | 10d | finish no earlier than 2011-01-19 |
| 191 | 1.5.4.5 | raw water | 10d | 2011-01-09 A | 2011-01-19 A | 100% | 2011-01-09 | 2011-01-19 | 10d | finish no earlier than 2011-01-19 |
| 192 | 1.5.4.6 | VEGETABLE OIL | 10d | 2011-01-09 A | 2011-01-19 A | 100% | 2011-01-09 | 2011-01-19 | 10d | finish no earlier than 2011-01-19 |
| 193 | 1.5.4.7 | chilled water | 10d | 2011-01-26 A | 2011-02-06 A | 100% | 2011-01-26 | 2011-02-06 | 10d | finish no earlier than 2011-02-06 |

| ID | WBS | Task | Duration | Start | Finish | Predecessors | Complete | Remaining | Baseline start | Baseline finish | Baseline duration | Total slack | Constraint |
| --- | --- | --- | --- | --- | --- | --- | --- | --- | --- | --- | --- | --- | --- |
| 301 | 1.6 | **Drawings approval** | 23d | 2011-02-01 A | 2011-02-27 |  | 25% | 17.25d | 2011-02-01 | 2011-02-27 | 23d | 131d |  |
| 310 | 1.6.1 | **sales adminstration building** | 3d | 2011-02-13 A | 2011-02-15 |  | 38% | 1.88d | 2011-02-13 | 2011-02-15 | 3d | 141d |  |
| 311 | 1.6.1.1 | hvac dwg | 3d | 2011-02-13 | 2011-02-15 | 204 |  |  | 2011-02-13 | 2011-02-15 | 3d | 141d |  |
| 312 | 1.6.1.2 | fire fighting dwq | 3d | 2011-02-13 A | 2011-02-15 | 205 | 75% | 0.75d | 2011-02-13 | 2011-02-15 | 3d | 141d |  |
| 321 | 1.6.2 | **adminstration building** | 3d | 2011-02-24 | 2011-02-27 |  |  |  | 2011-02-24 | 2011-02-27 | 3d | 131d |  |
| 322 | 1.6.2.1 | hvac dwg | 3d | 2011-02-24 | 2011-02-27 | 207 |  |  | 2011-02-24 | 2011-02-27 | 3d | 131d |  |
| 323 | 1.6.2.2 | fire fighting dwq | 3d | 2011-02-24 | 2011-02-27 | 208 |  |  | 2011-02-24 | 2011-02-27 | 3d | 131d |  |
| 324 | 1.6.2.3 | cold and hot water dwq | 3d | 2011-02-24 | 2011-02-27 | 209 |  |  | 2011-02-24 | 2011-02-27 | 3d | 131d | start no earlier than 2011-02-13 |
| 302 | 1.6.3 | **factroy** | 3d | 2011-02-01 | 2011-02-03 |  |  |  | 2011-02-01 | 2011-02-03 | 3d | 151d |  |
| 303 | 1.6.3.1 | hvac dwq | 3d | 2011-02-01 | 2011-02-03 | 196 |  |  | 2011-02-01 | 2011-02-03 | 3d | 151d |  |
| 304 | 1.6.3.2 | fire fighting dwq | 3d | 2011-02-01 | 2011-02-03 | 197 |  |  | 2011-02-01 | 2011-02-03 | 3d | 151d |  |
| 305 | 1.6.3.3 | compressed air | 3d | 2011-02-01 | 2011-02-03 | 198 |  |  | 2011-02-01 | 2011-02-03 | 3d | 151d |  |
| 306 | 1.6.3.4 | hot water | 3d | 2011-02-01 | 2011-02-03 | 199 |  |  | 2011-02-01 | 2011-02-03 | 3d | 151d |  |
| 307 | 1.6.3.5 | raw water | 3d | 2011-02-01 | 2011-02-03 | 200 |  |  | 2011-02-01 | 2011-02-03 | 3d | 151d |  |
| 308 | 1.6.3.6 | VEGETABLE OIL | 3d | 2011-02-01 | 2011-02-03 | 201 |  |  | 2011-02-01 | 2011-02-03 | 3d | 151d |  |
| 309 | 1.6.3.7 | cold water dwq | 3d | 2011-02-01 | 2011-02-03 | 202 |  |  | 2011-02-01 | 2011-02-03 | 3d | 151d |  |
| 313 | 1.6.4 | **layout** | 3d | 2011-02-16 A | 2011-02-19 | 187 | 57% | 1.29d | 2011-02-16 | 2011-02-19 | 3d | 138d |  |
| 314 | 1.6.4.1 | fire fighting dwq | 3d | 2011-02-16 A | 2011-02-19 A | 188 | 100% |  | 2011-02-16 | 2011-02-19 | 3d |  | finish no earlier than 2011-01-19 |
| 315 | 1.6.4.2 | pump room | 3d | 2011-02-16 | 2011-02-19 | 194 |  |  | 2011-02-16 | 2011-02-19 | 3d | 138d | finish no earlier than 2011-02-15 |
| 316 | 1.6.4.3 | chiller room | 3d | 2011-02-16 | 2011-02-19 | 189 |  |  | 2011-02-16 | 2011-02-19 | 3d | 138d | finish no earlier than 2011-01-19 |
| 317 | 1.6.4.4 | compressor room | 3d | 2011-02-16 | 2011-02-19 | 190 |  |  | 2011-02-16 | 2011-02-19 | 3d | 138d | finish no earlier than 2011-01-19 |
| 318 | 1.6.4.5 | raw water | 3d | 2011-02-16 A | 2011-02-19 A | 191 | 100% |  | 2011-02-16 | 2011-02-19 | 3d |  | finish no earlier than 2011-01-19 |
| 319 | 1.6.4.6 | VEGETABLE OIL | 3d | 2011-02-16 A | 2011-02-19 A | 192 | 100% |  | 2011-02-16 | 2011-02-19 | 3d |  | finish no earlier than 2011-01-19 |
| 320 | 1.6.4.7 | chilled water | 3d | 2011-02-16 A | 2011-02-19 A | 193 | 100% |  | 2011-02-16 | 2011-02-19 | 3d |  |  |

| ID | WBS | Task | Duration | Start | Finish | Predecessors | Complete | Remaining | Baseline start | Baseline finish | Baseline duration | Total slack | Free slack | Constraint |
| --- | --- | --- | --- | --- | --- | --- | --- | --- | --- | --- | --- | --- | --- | --- |
| 258 | 1.7 | **Mechanical components purchasing process** | 160d? | 2011-01-13 A | 2011-07-18 |  | 11% | 143.09d? | 2011-01-13 | 2011-07-18 | 160d? | 10d |  |  |
| 259 | 1.7.1 | **HVAC** | 156d? | 2011-01-18 A | 2011-07-18 |  | 24% | 118d? | 2011-01-13 | 2011-07-18 | 160d? | 10d |  |  |
| 260 | 1.7.1.1 | Black steel pipe schedule 40 | 4d | 2011-01-18 A | 2011-01-22 A | 211 | 100% |  | 2011-01-18 | 2011-01-22 | 4d |  |  | start no earlier than 2011-01-16 |
| 264 | 1.7.1.2 | pipes , duct insulation & cladding | 30d | 2011-01-23 A | 2011-02-26 | 215 | 50% | 15d | 2011-01-23 | 2011-02-26 | 30d | 83d | 3d | start no earlier than 2011-01-16 |
| 261 | 1.7.1.3 | duct work | 1d? | 2011-01-18 A | 2011-01-18 | 212 | 50% | 0.5d? | 2011-01-18 | 2011-01-18 | 1d? | 75d | 22d | start no earlier than 2011-01-16 |
| 265 | 1.7.1.4 | valves | 1d? | 2011-01-23 | 2011-01-23 | 216 |  |  | 2011-01-23 | 2011-01-23 | 1d? | 161d |  | start no earlier than 2011-01-16 |
| 266 | 1.7.1.5 | fan coil unit | 56d | 2011-01-23 A | 2011-03-28 | 217 | 50% | 28d | 2011-01-23 | 2011-03-28 | 56d | 96d | 0d | start no earlier than 2011-01-16 |
| 279 | 1.7.1.6 | split unit | 75d | 2011-02-17 | 2011-05-15 | 232 |  |  | 2011-02-17 | 2011-05-15 | 75d | 63d | 11d | start no earlier than 2011-01-16 |
| 262 | 1.7.1.7 | volume damper and fire damper | 70d | 2011-01-18 | 2011-04-09 | 213 |  |  | 2011-01-18 | 2011-04-09 | 70d | 96d |  | start no earlier than 2011-01-16 |
| 267 | 1.7.1.8 | air curtian | 70d | 2011-01-23 A | 2011-04-13 | 218 | 50% | 35d | 2011-01-23 | 2011-04-13 | 70d | 87d | 0d | start no earlier than 2011-01-16 |
| 273 | 1.7.1.9 | centrifugal fans, roof top fans and axial fans | 84d | 2011-01-30 | 2011-05-07 | 224 |  |  | 2011-01-30 | 2011-05-07 | 84d | 57d | 0d | start no earlier than 2011-01-16 |
| 276 | 1.7.1.10 | Air outlet and door grill | 70d | 2011-02-09 | 2011-05-01 | 227 |  |  | 2011-02-09 | 2011-05-01 | 70d | 77d |  | start no earlier than 2011-01-16 |
| 274 | 1.7.1.11 | Textille duct | 84d | 2011-01-30 | 2011-05-07 | 225 |  |  | 2011-01-30 | 2011-05-07 | 84d | 72d |  | start no earlier than 2011-01-16 |
| 268 | 1.7.1.12 | Air handling unit | 30d | 2011-01-23 A | 2011-02-26 | 219 | 50% | 15d | 2011-01-23 | 2011-02-26 | 30d | 127d | 62d | start no earlier than 2011-01-16 |
| 269 | 1.7.1.13 | Expasion tank | 30d | 2011-01-23 | 2011-02-26 | 220 |  |  | 2011-01-23 | 2011-02-26 | 30d | 132d |  | start no earlier than 2011-01-16 |
| 270 | 1.7.1.14 | Air sepertor | 30d | 2011-01-23 | 2011-02-26 | 221 |  |  | 2011-01-23 | 2011-02-26 | 30d | 132d |  | start no earlier than 2011-01-16 |
| 271 | 1.7.1.15 | chilled water pumps & cooling water pump | 112d | 2011-01-23 A | 2011-06-01 | 222 | 50% | 56d | 2011-01-23 | 2011-06-01 | 112d | 50d |  | start no earlier than 2011-01-16 |
| 263 | 1.7.1.16 | Absorption chiller | 156d | 2011-01-18 A | 2011-07-18 | 214 | 50% | 78d | 2011-01-18 | 2011-07-18 | 156d | 0d |  | start no earlier than 2011-01-16 |
| 272 | 1.7.1.17 | Cooling tower | 70d | 2011-01-23 A | 2011-04-13 | 223 | 50% | 35d | 2011-01-23 | 2011-04-13 | 70d | 87d | 0d | start no earlier than 2011-01-16 |
| 277 | 1.7.1.18 | DDC control | 112d | 2011-02-09 | 2011-06-19 | 228 |  |  | 2011-02-09 | 2011-06-19 | 112d | 35d |  | finish no earlier than 2011-02-06 |
| 278 | 1.7.1.19 | Insect killer | 1d? | 2011-02-16 A | 2011-02-16 | 229 | 50% | 0.5d? | 2011-02-16 | 2011-02-16 | 1d? | 135d | 48d | start no earlier than 2011-02-10 |
| 275 | 1.7.1.20 | upvc pipes | 10d | 2011-01-29 | 2011-02-08 | 226 |  |  | 2011-01-30 | 2011-02-09 | 10d | 147d |  | start no earlier than 2011-01-23 |
| 280 | 1.7.2 | **UTILITES and fire fighting** | 151d | 2011-01-13 | 2011-07-07 |  |  |  | 2011-01-13 | 2011-07-07 | 151d | 19d |  |  |
| 281 | 1.7.2.1 | Black steel pipe schedule 40 | 4d | 2011-01-13 | 2011-01-17 | 234 |  |  | 2011-01-13 | 2011-01-17 | 4d | 126d | 21d | start no earlier than 2011-01-08 |
| 282 | 1.7.2.2 | gate valve | 20d | 2011-01-13 | 2011-02-05 | 235 |  |  | 2011-01-13 | 2011-02-05 | 20d | 150d |  | start no earlier than 2011-01-08 |
| 283 | 1.7.2.3 | ball and balancing valve | 20d | 2011-01-13 | 2011-02-05 | 236 |  |  | 2011-01-13 | 2011-02-05 | 20d | 150d |  | start no earlier than 2011-01-08 |
| 284 | 1.7.2.4 | fire hose cabient and fire extinguishing | 60d | 2011-01-26 | 2011-04-05 | 238 |  |  | 2011-01-26 | 2011-04-05 | 60d | 79d | 0d | start no earlier than 2011-01-20 |
| 285 | 1.7.2.5 | Siamese connection and fire hydrant | 60d | 2011-01-26 | 2011-04-05 | 240 |  |  | 2011-01-26 | 2011-04-05 | 60d | 99d |  | start no earlier than 2011-01-20 |
| 286 | 1.7.2.6 | float valve | 20d | 2011-01-26 | 2011-02-17 | 241 |  |  | 2011-01-26 | 2011-02-17 | 20d | 139d |  | start no earlier than 2011-01-20 |
| 287 | 1.7.2.7 | flow meter and totalizer | 84d | 2011-01-26 | 2011-05-03 | 242 |  |  | 2011-01-26 | 2011-05-03 | 84d | 70d | 0d | start no earlier than 2011-01-20 |
| 288 | 1.7.2.8 | sewage and sumpersible pumps | 98d | 2011-01-26 | 2011-05-19 | 243 |  |  | 2011-01-26 | 2011-05-19 | 98d | 61d |  | start no earlier than 2011-01-20 |
| 289 | 1.7.2.9 | fire pumps | 140d | 2011-01-26 | 2011-07-07 | 244 |  |  | 2011-01-26 | 2011-07-07 | 140d | 19d |  | start no earlier than 2011-01-20 |
| 290 | 1.7.2.10 | booster pumps | 140d | 2011-01-26 | 2011-07-07 | 245 |  |  | 2011-01-26 | 2011-07-07 | 140d | 19d |  | start no earlier than 2011-01-20 |
| 291 | 1.7.2.11 | ultra violet sterilizer | 140d | 2011-01-26 | 2011-07-07 | 246 |  |  | 2011-01-26 | 2011-07-07 | 140d | 19d |  | start no earlier than 2011-01-20 |
| 292 | 1.7.2.12 | st. steel gate valve | 20d | 2011-01-26 | 2011-02-17 | 247 |  |  | 2011-01-26 | 2011-02-17 | 20d | 139d |  | start no earlier than 2011-01-20 |
| 293 | 1.7.2.13 | CIP CLEANING STATION | 126d | 2011-01-26 | 2011-06-21 | 248 |  |  | 2011-01-26 | 2011-06-21 | 126d | 23d | 0d | start no earlier than 2011-01-20 |
| 294 | 1.7.2.14 | Hot water mixer | 112d | 2011-01-26 | 2011-06-05 | 249 |  |  | 2011-01-26 | 2011-06-05 | 112d | 42d | 0d | start no earlier than 2011-01-20 |
| 295 | 1.7.2.15 | hot water pumps | 70d | 2011-01-26 | 2011-04-17 | 251 |  |  | 2011-01-26 | 2011-04-17 | 70d | 84d | 0d | start no earlier than 2011-01-20 |
| 296 | 1.7.2.16 | water softener | 30d | 2011-01-26 | 2011-03-01 | 252 |  |  | 2011-01-26 | 2011-03-01 | 30d | 129d |  | start no earlier than 2011-01-20 |
| 297 | 1.7.2.17 | st. steel pipes | 20d | 2011-01-26 | 2011-02-17 | 253 |  |  | 2011-01-26 | 2011-02-17 | 20d | 139d |  | start no earlier than 2011-01-20 |
| 298 | 1.7.2.18 | VEGETABLE OIL PUMP | 84d | 2011-02-09 | 2011-05-17 | 255 |  |  | 2011-02-09 | 2011-05-17 | 84d | 58d | 0d | finish no earlier than 2011-02-06 |
| 299 | 1.7.2.19 | OIL TANK | 84d | 2011-02-09 | 2011-05-17 | 256 |  |  | 2011-02-09 | 2011-05-17 | 84d | 63d |  | finish no earlier than 2011-02-06 |
| 300 | 1.7.2.20 | heat tracing | 98d | 2011-02-09 | 2011-06-02 | 257 |  |  | 2011-02-09 | 2011-06-02 | 98d | 19d | 0d | finish no earlier than 2011-02-06 |

| ID | WBS | Task | Type | Duration | Start | Finish | Predecessors | Baseline start | Baseline finish | Baseline duration | Total slack | Free slack | Constraint |
| --- | --- | --- | --- | --- | --- | --- | --- | --- | --- | --- | --- | --- | --- |
| 50 | 1.8 | **installations** |  | 175d | 2011-01-08 | 2011-07-30 |  | 2011-01-08 | 2011-07-30 | 175d | 0d |  |  |
| 51 | 1.8.1 | **fence and under ground works** |  | 96d | 2011-01-08 | 2011-04-28 |  | 2011-01-08 | 2011-04-28 | 96d | 79d |  |  |
| 52 | 1.8.1.1 | gama scope for excavation for the under ground pipe |  | 15d | 2011-01-08 | 2011-01-24 |  | 2011-01-08 | 2011-01-24 | 15d | 120d | 15d | start no earlier than 2011-01-08 |
| 53 | 1.8.1.2 | **preparation for installation** |  | 17d | 2011-01-23 | 2011-02-10 |  | 2011-01-23 | 2011-02-10 | 17d | 105d |  |  |
| 54 | 1.8.1.2.1 | support fabrication |  | 10d | 2011-01-23 | 2011-02-02 | 260 | 2011-01-23 | 2011-02-02 | 10d | 105d | 0d |  |
| 55 | 1.8.1.2.2 | painting of supports |  | 7d | 2011-02-03 | 2011-02-10 | 54 | 2011-02-03 | 2011-02-10 | 7d | 105d | 0d |  |
| 56 | 1.8.1.3 | **supports installation** |  | 66d | 2011-02-12 | 2011-04-28 | 55 | 2011-02-12 | 2011-04-28 | 66d | 79d |  |  |
| 57 | 1.8.1.3.1 | **installations of pipe works** |  | 66d | 2011-02-12 | 2011-04-28 |  | 2011-02-12 | 2011-04-28 | 66d | 79d |  |  |
| 58 | 1.8.1.3.1.1 | under ground fire pipe installation |  | 15d | 2011-02-12 | 2011-02-28 | 281, 52 | 2011-02-12 | 2011-02-28 | 15d | 130d |  |  |
| 59 | 1.8.1.3.1.2 | under ground raw water pipe installation |  | 15d | 2011-02-12 | 2011-02-28 | 281, 52 | 2011-02-12 | 2011-02-28 | 15d | 130d |  |  |
| 60 | 1.8.1.3.1.3 | under ground chilled water pipe installation, insulation and cladding upvc pipes |  | 30d | 2011-02-12 | 2011-03-17 | 260, 52 | 2011-02-12 | 2011-03-17 | 30d | 115d |  |  |
| 61 | 1.8.1.3.1.4 | under ground vegetable oil pipe installation |  | 15d | 2011-02-12 | 2011-02-28 | 281, 52 | 2011-02-12 | 2011-02-28 | 15d | 130d |  |  |
| 62 | 1.8.1.3.1.5 | fire fighting pipes installation on fence |  | 20d | 2011-02-12 | 2011-03-06 | 281, 52 | 2011-02-12 | 2011-03-06 | 20d | 105d | 26d |  |
| 63 | 1.8.1.3.1.6 | raw water pipes installation on fence |  | 20d | 2011-02-12 | 2011-03-06 | 281, 52 | 2011-02-12 | 2011-03-06 | 20d | 125d |  |  |
| 64 | 1.8.1.3.1.7 | fire hose cabient and fire extinguisher |  | 20d | 2011-04-06 | 2011-04-28 | 284, 62 | 2011-04-06 | 2011-04-28 | 20d | 79d |  |  |
| 100 | 1.8.2 | **DC building** |  | 73d | 2011-02-20 | 2011-05-15 |  | 2011-02-20 | 2011-05-15 | 73d | 65d |  |  |
| 105 | 1.8.2.1 | finshing from gama | milestone | 0d | 2011-02-28 | 2011-02-28 |  | 2011-02-28 | 2011-02-28 | 0d | 116d | 0d | start no earlier than 2011-02-28 |
| 101 | 1.8.2.2 | **preparation for installation** |  | 25d | 2011-02-20 | 2011-03-20 |  | 2011-02-20 | 2011-03-20 | 25d | 113d |  |  |
| 102 | 1.8.2.2.1 | support fabrication |  | 8d | 2011-02-20 | 2011-02-28 |  | 2011-02-20 | 2011-02-28 | 8d | 113d | 0d | start no earlier than 2011-02-20 |
| 103 | 1.8.2.2.2 | painting of supports |  | 7d | 2011-03-01 | 2011-03-08 | 102 | 2011-03-01 | 2011-03-08 | 7d | 113d | 0d |  |
| 104 | 1.8.2.2.3 | supports installation |  | 10d | 2011-03-09 | 2011-03-20 | 103 | 2011-03-09 | 2011-03-20 | 10d | 113d |  |  |
| 106 | 1.8.2.3 | **HVAC system** |  | 66d | 2011-02-28 | 2011-05-15 |  | 2011-02-28 | 2011-05-15 | 66d | 65d |  |  |
| 107 | 1.8.2.3.1 | pipe and valves installation |  | 15d | 2011-02-28 | 2011-03-16 | 260, 105 | 2011-02-28 | 2011-03-16 | 15d | 116d |  |  |
| 108 | 1.8.2.3.2 | galvanized duct installation |  | 10d | 2011-02-28 | 2011-03-10 | 105 | 2011-02-28 | 2011-03-10 | 10d | 121d |  |  |
| 110 | 1.8.2.3.3 | fans |  | 7d | 2011-05-08 | 2011-05-15 | 105, 273 | 2011-05-08 | 2011-05-15 | 7d | 65d |  |  |
| 109 | 1.8.2.3.4 | air curtain and Insect killer |  | 5d | 2011-04-14 | 2011-04-19 | 105, 278, 267 | 2011-04-14 | 2011-04-19 | 5d | 87d |  |  |

Notes:
- 100: after rafter
- 102: after masonry
- 106: after masonry
- 110: long lead item

| ID | WBS | Task | Type | Duration | Start | Finish | Predecessors | Baseline start | Baseline finish | Baseline duration | Total slack | Free slack | Constraint |
| --- | --- | --- | --- | --- | --- | --- | --- | --- | --- | --- | --- | --- | --- |
| 111 | 1.8.2.4 | **Fire Fifgting** |  | 35d | 2011-02-28 | 2011-04-09 |  | 2011-02-28 | 2011-04-09 | 35d | 96d |  |  |
| 112 | 1.8.2.4.1 | pipe installation fire |  | 7d | 2011-02-28 | 2011-03-07 | 105, 281 | 2011-02-28 | 2011-03-07 | 7d | 121d | 25d |  |
| 113 | 1.8.2.4.2 | fire hose cabient and fire extinguisher |  | 3d | 2011-04-06 | 2011-04-09 | 284, 112 | 2011-04-06 | 2011-04-09 | 3d | 96d |  |  |
| 65 | 1.8.3 | **packaging and processing part I** |  | 145d | 2011-01-20 | 2011-07-07 |  | 2011-01-20 | 2011-07-07 | 145d | 19d |  |  |
| 81 | 1.8.3.1 | FACTORY PIPES AFTER | milestone | 0d | 2011-03-02 | 2011-03-02 |  | 2011-03-02 | 2011-03-02 | 0d | 78d | 0d | start no earlier than 2011-03-02 |
| 70 | 1.8.3.2 | DUCT & FANS installation AFTER | milestone | 0d | 2011-02-14 | 2011-02-14 |  | 2011-02-14 | 2011-02-14 | 0d | 53d | 0d | start no earlier than 2011-02-14 |
| 66 | 1.8.3.3 | **preparation for installation** |  | 17d | 2011-01-20 | 2011-02-08 |  | 2011-01-20 | 2011-02-08 | 17d | 137d |  |  |
| 67 | 1.8.3.3.1 | support fabrication |  | 10d | 2011-01-20 | 2011-01-31 |  | 2011-01-20 | 2011-01-31 | 10d | 137d | 0d | start no earlier than 2011-01-20 |
| 68 | 1.8.3.3.2 | painting of supports |  | 7d | 2011-02-01 | 2011-02-08 | 67 | 2011-02-01 | 2011-02-08 | 7d | 137d | 0d |  |
| 69 | 1.8.3.4 | supports installation |  | 10d | 2011-02-09 | 2011-02-20 | 68 | 2011-02-09 | 2011-02-20 | 10d | 137d |  |  |
| 71 | 1.8.3.5 | **HVAC system** |  | 99d | 2011-02-14 | 2011-06-08 |  | 2011-02-14 | 2011-06-08 | 99d | 44d |  |  |
| 73 | 1.8.3.5.1 | pipe and valves installation |  | 21d | 2011-03-02 | 2011-03-26 | 260, 81 | 2011-03-02 | 2011-03-26 | 21d | 78d | 0d |  |
| 72 | 1.8.3.5.2 | galvanized duct installation |  | 90d | 2011-02-14 | 2011-05-29 | 261, 70 | 2011-02-14 | 2011-05-29 | 90d | 53d |  |  |
| 74 | 1.8.3.5.3 | pipes , duct insulation & cladding |  | 30d | 2011-03-27 | 2011-04-30 | 73 | 2011-03-27 | 2011-04-30 | 30d | 78d |  |  |
| 75 | 1.8.3.5.4 | Fan coil units |  | 7d | 2011-03-29 | 2011-04-05 | 266, 70 | 2011-03-29 | 2011-04-05 | 7d | 99d |  |  |
| 76 | 1.8.3.5.5 | split units |  | 5d | 2011-03-29 | 2011-04-03 | 266, 70 | 2011-03-29 | 2011-04-03 | 5d | 101d |  |  |
| 78 | 1.8.3.5.6 | fans |  | 15d | 2011-05-08 | 2011-05-24 | 81, 273 | 2011-05-08 | 2011-05-24 | 15d | 57d |  |  |
| 79 | 1.8.3.5.7 | Air outlet and door grill |  | 5d | 2011-06-04 | 2011-06-08 |  | 2011-06-04 | 2011-06-08 | 5d | 44d |  | start no earlier than 2011-06-04 |
| 80 | 1.8.3.5.8 | Air Textile duct |  | 5d | 2011-06-04 | 2011-06-08 |  | 2011-06-04 | 2011-06-08 | 5d | 44d |  | start no earlier than 2011-06-04 |
| 77 | 1.8.3.5.9 | air curtain and Insect killer |  | 5d | 2011-04-14 | 2011-04-19 | 278, 70, 267 | 2011-04-14 | 2011-04-19 | 5d | 87d |  |  |
| 82 | 1.8.3.6 | **Fire Fifgting** |  | 33d | 2011-03-02 | 2011-04-09 |  | 2011-03-02 | 2011-04-09 | 33d | 96d |  |  |
| 83 | 1.8.3.6.1 | pipe installation |  | 20d | 2011-03-02 | 2011-03-24 | 81 | 2011-03-02 | 2011-03-24 | 20d | 106d | 10d |  |
| 84 | 1.8.3.6.2 | fire hose cabient and fire extinguisher |  | 3d | 2011-04-06 | 2011-04-09 | 284, 83 | 2011-04-06 | 2011-04-09 | 3d | 96d |  |  |
| 85 | 1.8.3.7 | **cold water** |  | 20d | 2011-03-02 | 2011-03-24 |  | 2011-03-02 | 2011-03-24 | 20d | 109d |  |  |
| 86 | 1.8.3.7.1 | pipe and valves installation |  | 20d | 2011-03-02 | 2011-03-24 | 81 | 2011-03-02 | 2011-03-24 | 20d | 109d |  |  |

Notes:
- 70: وطنية تريد البدءفي شهر 2 الصاج الداخلي ينتهي في 15-3 لا بد من البدء مبكرا / بعد الصاج الداخلي
- 69: after masonry+blaster
- 71: بعد الصاج الداخلي / بعد شاسيه المكن

| ID | WBS | Task | Type | Duration | Start | Finish | Predecessors | Baseline start | Baseline finish | Baseline duration | Total slack | Free slack | Constraint |
| --- | --- | --- | --- | --- | --- | --- | --- | --- | --- | --- | --- | --- | --- |
| 87 | 1.8.3.8 | **comressed air** |  | 25d | 2011-03-02 | 2011-03-30 |  | 2011-03-02 | 2011-03-30 | 25d | 104d |  |  |
| 88 | 1.8.3.8.1 | pipe and valves installation |  | 25d | 2011-03-02 | 2011-03-30 | 81 | 2011-03-02 | 2011-03-30 | 25d | 104d |  |  |
| 89 | 1.8.3.9 | **hot water** |  | 87d | 2011-03-02 | 2011-06-11 |  | 2011-03-02 | 2011-06-11 | 87d | 42d |  |  |
| 90 | 1.8.3.9.1 | pipe and valves installation |  | 49d | 2011-03-02 | 2011-04-27 | 81, 264 | 2011-03-02 | 2011-04-27 | 49d | 80d |  |  |
| 91 | 1.8.3.9.2 | hot water mixer |  | 5d | 2011-06-06 | 2011-06-11 | 81, 294 | 2011-06-06 | 2011-06-11 | 5d | 42d |  |  |
| 92 | 1.8.3.10 | **raw water** |  | 59d | 2011-03-02 | 2011-05-09 |  | 2011-03-02 | 2011-05-09 | 59d | 70d |  |  |
| 93 | 1.8.3.10.1 | pipe and valves installation |  | 10d | 2011-03-02 | 2011-03-13 | 81 | 2011-03-02 | 2011-03-13 | 10d | 119d |  |  |
| 94 | 1.8.3.10.2 | flow meter and totalizer |  | 5d | 2011-05-04 | 2011-05-09 | 81, 287 | 2011-05-04 | 2011-05-09 | 5d | 70d |  |  |
| 95 | 1.8.3.11 | **VEGETABLE OIL** |  | 110d | 2011-03-02 | 2011-07-07 |  | 2011-03-02 | 2011-07-07 | 110d | 19d |  |  |
| 96 | 1.8.3.11.1 | pipe and valves installation |  | 5d | 2011-03-02 | 2011-03-07 | 81, 264 | 2011-03-02 | 2011-03-07 | 5d | 124d |  |  |
| 98 | 1.8.3.11.2 | heat tracing |  | 15d | 2011-06-04 | 2011-06-20 | 81, 300 | 2011-06-04 | 2011-06-20 | 15d | 19d | 0d |  |
| 99 | 1.8.3.11.3 | pipes , duct insulation & cladding |  | 15d | 2011-06-21 | 2011-07-07 | 98 | 2011-06-21 | 2011-07-07 | 15d | 19d |  |  |
| 97 | 1.8.3.11.4 | flow meter and totalizer |  | 5d | 2011-05-04 | 2011-05-09 | 81, 287 | 2011-05-04 | 2011-05-09 | 5d | 70d |  |  |
| 168 | 1.8.4 | **packaging and processing part II** |  | 46d | 2011-05-18 | 2011-07-10 |  | 2011-05-18 | 2011-07-10 | 46d | 17d |  |  |
| 172 | 1.8.4.1 | DUCT & FANS installation AFTER | milestone | 0d | 2011-05-25 | 2011-05-25 |  | 2011-05-25 | 2011-05-25 | 0d | 17d | 0d | start no earlier than 2011-05-25 |
| 179 | 1.8.4.2 | PIPES & DUCT INSIDE FACTORY AFTER | milestone | 0d | 2011-05-29 | 2011-05-29 |  | 2011-05-29 | 2011-05-29 | 0d | 37d | 0d | start no earlier than 2011-05-29 |
| 169 | 1.8.4.3 | **preparation for installation** |  | 20d | 2011-05-18 | 2011-06-09 |  | 2011-05-18 | 2011-06-09 | 20d | 33d |  |  |
| 170 | 1.8.4.3.1 | support fabrication |  | 10d | 2011-05-18 | 2011-05-29 |  | 2011-05-18 | 2011-05-29 | 10d | 33d | 0d | start no earlier than 2011-05-18 |
| 171 | 1.8.4.3.2 | painting of supports |  | 10d | 2011-05-30 | 2011-06-09 | 170 | 2011-05-30 | 2011-06-09 | 10d | 33d | 0d |  |
| 185 | 1.8.4.4 | supports installation |  | 10d | 2011-06-11 | 2011-06-21 | 171 | 2011-06-11 | 2011-06-21 | 10d | 33d |  |  |
| 173 | 1.8.4.5 | **HVAC system** |  | 40d | 2011-05-25 | 2011-07-10 |  | 2011-05-25 | 2011-07-10 | 40d | 17d |  |  |
| 174 | 1.8.4.5.1 | galvanized duct installation |  | 30d | 2011-05-25 | 2011-06-28 | 261, 172 | 2011-05-25 | 2011-06-28 | 30d | 17d | 0d |  |
| 176 | 1.8.4.5.2 | Duct insulation & cladding |  | 10d | 2011-06-29 | 2011-07-10 | 174 | 2011-06-29 | 2011-07-10 | 10d | 17d |  |  |
| 177 | 1.8.4.5.3 | Air outlet and door grill |  | 3d | 2011-07-07 | 2011-07-10 |  | 2011-07-07 | 2011-07-10 | 3d | 17d |  | start no earlier than 2011-07-07 |
| 178 | 1.8.4.5.4 | Air Textile duct |  | 3d | 2011-07-07 | 2011-07-10 |  | 2011-07-07 | 2011-07-10 | 3d | 17d |  | start no earlier than 2011-07-07 |
| 175 | 1.8.4.5.5 | air curtain and Insect killer |  | 5d | 2011-05-29 | 2011-06-02 | 278, 267, 179 | 2011-05-29 | 2011-06-02 | 5d | 49d |  |  |

| ID | WBS | Task | Type | Duration | Start | Finish | Predecessors | Baseline start | Baseline finish | Baseline duration | Total slack | Free slack | Constraint |
| --- | --- | --- | --- | --- | --- | --- | --- | --- | --- | --- | --- | --- | --- |
| 180 | 1.8.4.6 | **Fire Fifgting** |  | 17d | 2011-05-29 | 2011-06-16 |  | 2011-05-29 | 2011-06-16 | 17d | 37d |  |  |
| 181 | 1.8.4.6.1 | pipe installation |  | 15d | 2011-05-29 | 2011-06-14 | 179 | 2011-05-29 | 2011-06-14 | 15d | 37d | 0d |  |
| 182 | 1.8.4.6.2 | fire hose cabient and fire extinguisher |  | 2d | 2011-06-15 | 2011-06-16 | 284, 181 | 2011-06-15 | 2011-06-16 | 2d | 37d |  |  |
| 183 | 1.8.4.7 | **cold water** |  | 15d | 2011-05-29 | 2011-06-14 |  | 2011-05-29 | 2011-06-14 | 15d | 39d |  |  |
| 184 | 1.8.4.7.1 | pipe and valves installation |  | 15d | 2011-05-29 | 2011-06-14 | 179 | 2011-05-29 | 2011-06-14 | 15d | 39d |  |  |
| 127 | 1.8.5 | **UTILITY BULDING** |  | 118d | 2011-03-15 | 2011-07-30 |  | 2011-03-15 | 2011-07-30 | 118d | 0d |  |  |
| 128 | 1.8.5.1 | FINSHING FROM GAMA | milestone | 0d | 2011-03-15 | 2011-03-15 |  | 2011-03-15 | 2011-03-15 | 0d | 108d | 0d | start no earlier than 2011-03-15 |
| 132 | 1.8.5.2 | **preparation for installation** |  | 8d | 2011-04-30 | 2011-05-08 |  | 2011-04-30 | 2011-05-08 | 8d | 66d |  |  |
| 133 | 1.8.5.2.1 | support fabrication |  | 5d | 2011-04-30 | 2011-05-04 |  | 2011-04-30 | 2011-05-04 | 5d | 66d | 0d | start no earlier than 2011-04-30 |
| 134 | 1.8.5.2.2 | painting of supports |  | 3d | 2011-05-05 | 2011-05-08 | 133 | 2011-05-05 | 2011-05-08 | 3d | 66d | 0d |  |
| 135 | 1.8.5.3 | supports installation |  | 5d | 2011-05-09 | 2011-05-14 | 134 | 2011-05-09 | 2011-05-14 | 5d | 66d |  |  |
| 138 | 1.8.5.4 | CHILLER ROOM |  | 10d | 2011-07-19 | 2011-07-30 | 128, 263 | 2011-07-19 | 2011-07-30 | 10d | 0d |  |  |
| 129 | 1.8.5.5 | COMPRESSOR ROOM |  | 10d | 2011-03-15 | 2011-03-26 | 128 | 2011-03-15 | 2011-03-26 | 10d | 108d |  |  |
| 137 | 1.8.5.6 | CIP PUMP |  | 10d | 2011-06-22 | 2011-07-03 | 128, 293 | 2011-06-22 | 2011-07-03 | 10d | 23d |  |  |
| 136 | 1.8.5.7 | VEGETABLE OIL PUMP |  | 5d | 2011-05-18 | 2011-05-23 | 128, 298 | 2011-05-18 | 2011-05-23 | 5d | 58d |  |  |
| 130 | 1.8.5.8 | water softener |  | 5d | 2011-04-14 | 2011-04-19 | 128, 272 | 2011-04-14 | 2011-04-19 | 5d | 87d |  |  |
| 131 | 1.8.5.9 | hot water pumps |  | 5d | 2011-04-18 | 2011-04-23 | 128, 295 | 2011-04-18 | 2011-04-23 | 5d | 84d |  |  |
| 139 | 1.8.6 | **PUMP ROOM** |  | 52d | 2011-03-15 | 2011-05-14 |  | 2011-03-15 | 2011-05-14 | 52d | 66d |  |  |
| 140 | 1.8.6.1 | FINSHING FROM GAMA | milestone | 0d | 2011-03-15 | 2011-03-15 |  | 2011-03-15 | 2011-03-15 | 0d | 108d | 0d | start no earlier than 2011-03-15 |
| 144 | 1.8.6.2 | **preparation for installation** |  | 8d | 2011-04-30 | 2011-05-08 |  | 2011-04-30 | 2011-05-08 | 8d | 66d |  |  |
| 145 | 1.8.6.2.1 | support fabrication |  | 5d | 2011-04-30 | 2011-05-04 |  | 2011-04-30 | 2011-05-04 | 5d | 66d | 0d | start no earlier than 2011-04-30 |
| 146 | 1.8.6.2.2 | painting of supports |  | 3d | 2011-05-05 | 2011-05-08 | 145 | 2011-05-05 | 2011-05-08 | 3d | 66d | 0d |  |
| 147 | 1.8.6.3 | supports installation |  | 5d | 2011-05-09 | 2011-05-14 | 146 | 2011-05-09 | 2011-05-14 | 5d | 66d |  |  |
| 141 | 1.8.6.4 | FIRE PUMPS |  | 10d | 2011-03-15 | 2011-03-26 | 140 | 2011-03-15 | 2011-03-26 | 10d | 108d |  |  |
| 142 | 1.8.6.5 | BOOSTER PUMP |  | 10d | 2011-03-15 | 2011-03-26 | 140 | 2011-03-15 | 2011-03-26 | 10d | 108d |  |  |
| 143 | 1.8.6.6 | sewage and sumpersible pumps |  | 10d | 2011-03-15 | 2011-03-26 | 140 | 2011-03-15 | 2011-03-26 | 10d | 108d |  |  |

Notes:
- 127: مبني الخدمات و الملحقات
- 129: RC FOOTINGS+GUTTER
- 130: CHILLER ROOM MUST BE FINISHED
- 131: HEX ROOM MUST BE FINISHED

| ID | WBS | Task | Type | Duration | Start | Finish | Predecessors | Baseline start | Baseline finish | Baseline duration | Total slack | Free slack | Constraint |
| --- | --- | --- | --- | --- | --- | --- | --- | --- | --- | --- | --- | --- | --- |
| 148 | 1.8.7 | **ADMINSTRATION BUILDING** |  | 69d | 2011-05-01 | 2011-07-19 |  | 2011-05-01 | 2011-07-19 | 69d | 9d |  |  |
| 152 | 1.8.7.1 | INSTALATION AHU AFTER | milestone | 0d | 2011-05-10 | 2011-05-10 |  | 2011-05-10 | 2011-05-10 | 0d | 65d | 0d | start no earlier than 2011-05-10 |
| 164 | 1.8.7.2 | PIPES & DUCT AFTER | milestone | 0d | 2011-05-29 | 2011-05-29 |  | 2011-05-29 | 2011-05-29 | 0d | 9d | 0d | start no earlier than 2011-05-29 |
| 149 | 1.8.7.3 | **preparation for installation** |  | 17d | 2011-05-01 | 2011-05-19 |  | 2011-05-01 | 2011-05-19 | 17d | 51d |  |  |
| 150 | 1.8.7.3.1 | support fabrication |  | 10d | 2011-05-01 | 2011-05-11 |  | 2011-05-01 | 2011-05-11 | 10d | 51d | 0d | start no earlier than 2011-05-01 |
| 151 | 1.8.7.3.2 | painting of supports |  | 7d | 2011-05-12 | 2011-05-19 | 150 | 2011-05-12 | 2011-05-19 | 7d | 51d | 0d |  |
| 163 | 1.8.7.4 | supports installation |  | 10d | 2011-05-21 | 2011-05-31 | 151 | 2011-05-21 | 2011-05-31 | 10d | 51d |  |  |
| 153 | 1.8.7.5 | **HVAC system** |  | 61d | 2011-05-10 | 2011-07-19 |  | 2011-05-10 | 2011-07-19 | 61d | 9d |  |  |
| 155 | 1.8.7.5.1 | pipe and valves installation |  | 25d | 2011-05-29 | 2011-06-26 | 260, 164 | 2011-05-29 | 2011-06-26 | 25d | 9d | 0d |  |
| 156 | 1.8.7.5.2 | galvanized duct installation |  | 20d | 2011-05-29 | 2011-06-20 | 164 | 2011-05-29 | 2011-06-20 | 20d | 14d | 5d |  |
| 161 | 1.8.7.5.3 | pipes , duct insulation & cladding |  | 20d | 2011-06-27 | 2011-07-19 | 155, 156 | 2011-06-27 | 2011-07-19 | 20d | 9d |  |  |
| 154 | 1.8.7.5.4 | AIR HANDLING UNIT |  | 5d | 2011-05-10 | 2011-05-15 | 152, 268 | 2011-05-10 | 2011-05-15 | 5d | 65d |  |  |
| 157 | 1.8.7.5.5 | FAN COIL UNITS |  | 10d | 2011-05-29 | 2011-06-08 | 164, 266 | 2011-05-29 | 2011-06-08 | 10d | 44d |  |  |
| 158 | 1.8.7.5.6 | SPLIT UNITS |  | 2d | 2011-05-29 | 2011-05-30 | 164, 279 | 2011-05-29 | 2011-05-30 | 2d | 52d |  |  |
| 159 | 1.8.7.5.7 | FANS |  | 3d | 2011-05-29 | 2011-05-31 | 164, 273 | 2011-05-29 | 2011-05-31 | 3d | 51d |  |  |
| 162 | 1.8.7.5.8 | Air outlet and door grill |  | 7d | 2011-07-05 | 2011-07-12 |  | 2011-07-05 | 2011-07-12 | 7d | 15d |  | start no earlier than 2011-07-05 |
| 160 | 1.8.7.5.9 | air curtain and Insect killer |  | 5d | 2011-05-29 | 2011-06-02 | 278, 267, 164 | 2011-05-29 | 2011-06-02 | 5d | 49d |  |  |
| 165 | 1.8.7.6 | **Fire Fifgting** |  | 12d | 2011-05-29 | 2011-06-11 |  | 2011-05-29 | 2011-06-11 | 12d | 42d |  |  |
| 166 | 1.8.7.6.1 | pipe installation |  | 10d | 2011-05-29 | 2011-06-08 | 164 | 2011-05-29 | 2011-06-08 | 10d | 42d | 0d |  |
| 167 | 1.8.7.6.2 | fire hose cabient and fire extinguisher |  | 2d | 2011-06-09 | 2011-06-11 | 166 | 2011-06-09 | 2011-06-11 | 2d | 42d |  |  |
| 114 | 1.8.8 | **SALES ADMINSTRATION BUILDING** |  | 64d | 2011-02-26 | 2011-05-10 |  | 2011-02-26 | 2011-05-10 | 64d | 69d |  |  |
| 118 | 1.8.8.1 | MECHANICAL AFTER | milestone | 0d | 2011-03-05 | 2011-03-05 |  | 2011-03-05 | 2011-03-05 | 0d | 120d | 0d | start no earlier than 2011-03-05 |
| 115 | 1.8.8.2 | **preparation for installation** |  | 8d | 2011-02-26 | 2011-03-06 |  | 2011-02-26 | 2011-03-06 | 8d | 120d |  |  |
| 116 | 1.8.8.2.1 | support fabrication |  | 5d | 2011-02-26 | 2011-03-02 |  | 2011-02-26 | 2011-03-02 | 5d | 120d | 0d | start no earlier than 2011-02-26 |
| 117 | 1.8.8.2.2 | painting of supports |  | 3d | 2011-03-03 | 2011-03-06 | 116 | 2011-03-03 | 2011-03-06 | 3d | 120d | 0d |  |
| 126 | 1.8.8.3 | supports installation |  | 5d | 2011-03-07 | 2011-03-12 | 117 | 2011-03-07 | 2011-03-12 | 5d | 120d |  |  |

| ID | WBS | Task | Duration | Start | Finish | Predecessors | Baseline start | Baseline finish | Baseline duration | Total slack | Free slack |
| --- | --- | --- | --- | --- | --- | --- | --- | --- | --- | --- | --- |
| 119 | 1.8.8.4 | **HVAC system** | 58d | 2011-03-05 | 2011-05-10 |  | 2011-03-05 | 2011-05-10 | 58d | 69d |  |
| 120 | 1.8.8.4.1 | SPLIT UNITS | 7d | 2011-03-05 | 2011-03-12 | 118 | 2011-03-05 | 2011-03-12 | 7d | 120d |  |
| 122 | 1.8.8.4.2 | FANS | 3d | 2011-05-08 | 2011-05-10 | 118, 273 | 2011-05-08 | 2011-05-10 | 3d | 69d |  |
| 121 | 1.8.8.4.3 | galvanized duct installation | 5d | 2011-03-05 | 2011-03-09 | 118 | 2011-03-05 | 2011-03-09 | 5d | 122d |  |
| 123 | 1.8.8.5 | **Fire Fifgting** | 7d | 2011-03-05 | 2011-03-12 |  | 2011-03-05 | 2011-03-12 | 7d | 120d |  |
| 124 | 1.8.8.5.1 | pipe installation | 5d | 2011-03-05 | 2011-03-09 | 118 | 2011-03-05 | 2011-03-09 | 5d | 120d | 0d |
| 125 | 1.8.8.5.2 | fire hose cabient and fire extinguisher | 2d | 2011-03-10 | 2011-03-12 | 118, 124 | 2011-03-10 | 2011-03-12 | 2d | 120d |  |
