Schedule from MS Project, 2026-04-01 to 2027-11-18.

## Calendars

- Standard: Mon-Fri 08:00-12:00, 13:00-17:00; Sat-Sun off.

## Schedule

| ID | Task | Type | Duration | Start | Finish | Predecessors | Total slack | Free slack | Constraint |
| --- | --- | --- | --- | --- | --- | --- | --- | --- | --- |
| 1 | Design Team Mobilization |  | 10d | 2026-04-01 | 2026-04-14 |  | 0d |  | start no earlier than 2026-04-01 |
| 2 | Pre-Application Meeting with City Planning Authority |  | 3d | 2026-04-15 | 2026-04-17 | 1 | 41d | 37d | start no earlier than 2026-04-01 |
| 3 | Building Permit Application Preparation & Submission |  | 20d | 2026-06-10 | 2026-07-07 | 2, 13 | 4d | 0d | start no earlier than 2026-04-01 |
| 4 | M: Permit Application Submitted | milestone | 0d | 2026-07-07 | 2026-07-07 | 3 | 4d | 0d | start no earlier than 2026-04-01 |
| 5 | Authority Review & Condition Response |  | 40d | 2026-07-08 | 2026-09-01 | 4 | 4d | 0d | start no earlier than 2026-04-01 |
| 6 | M: Building Permit Approved | milestone | 0d | 2026-09-01 | 2026-09-01 | 5 | 4d | 0d | start no earlier than 2026-04-01 |
| 7 | Fire Authority & Environmental Submissions |  | 15d | 2026-07-08 | 2026-07-28 | 3 | 297d | 0d | start no earlier than 2026-04-01 |
| 8 | M: Fire Authority Approval Received | milestone | 0d | 2026-08-25 | 2026-08-25 | 7FS+20d | 297d | 284d | start no earlier than 2026-04-01 |
| 9 | Topographic Survey & Geotechnical Investigation |  | 15d | 2026-04-15 | 2026-05-05 | 1 | 0d |  | start no earlier than 2026-04-01 |
| 10 | M: Geotechnical Report Submitted to Design Team | milestone | 0d | 2026-05-19 | 2026-05-19 | 9FS+10d | 0d |  | start no earlier than 2026-04-01 |
| 11 | Foundation Recommendation Review & Confirmation |  | 5d | 2026-05-20 | 2026-05-26 | 10 | 0d |  | start no earlier than 2026-04-01 |
| 12 | Concept Design |  | 15d | 2026-04-15 | 2026-05-05 | 1 | 4d | 0d | start no earlier than 2026-04-01 |
| 13 | Schematic Design |  | 25d | 2026-05-06 | 2026-06-09 | 12 | 4d | 0d | start no earlier than 2026-04-01 |
| 14 | M: Schematic Design — Authority Submission | milestone | 0d | 2026-07-28 | 2026-07-28 | 13, 29 | 0d |  | start no earlier than 2026-04-01 |
| 15 | Design Development / Detailed Design |  | 30d | 2026-07-29 | 2026-09-08 | 14 | 0d |  | start no earlier than 2026-04-01 |
| 16 | IFC Package Preparation — Architectural |  | 10d | 2026-09-09 | 2026-09-22 | 15 | 39d | 0d | start no earlier than 2026-04-01 |
| 17 | M: Architectural IFC Package Issued | milestone | 0d | 2026-09-22 | 2026-09-22 | 16 | 39d | 0d | start no earlier than 2026-04-01 |
| 18 | M: Architectural Design Freeze | milestone | 0d | 2026-09-22 | 2026-09-22 | 17 | 302d |  | start no earlier than 2026-04-01 |
| 19 | Interior Space Planning & Layout |  | 20d | 2026-06-10 | 2026-07-07 | 13 | 272d | 0d | start no earlier than 2026-04-01 |
| 20 | Material, Finish & Specification Schedule |  | 10d | 2026-07-08 | 2026-07-21 | 19 | 272d | 0d | start no earlier than 2026-04-01 |
| 21 | Wayfinding & Signage Design |  | 5d | 2026-07-08 | 2026-07-14 | 19 | 277d | 5d | start no earlier than 2026-04-01 |
| 22 | Interior IFC Package |  | 5d | 2026-07-22 | 2026-07-28 | 20, 21 | 272d | 0d | start no earlier than 2026-04-01 |
| 23 | M: Interior Design IFC Issued | milestone | 0d | 2026-07-28 | 2026-07-28 | 22 | 272d | 234d | start no earlier than 2026-04-01 |
| 24 | Structural System Concept & Selection |  | 5d | 2026-04-15 | 2026-04-21 | 1 | 25d |  | start no earlier than 2026-04-01 |
| 25 | Foundation System Design |  | 10d | 2026-05-27 | 2026-06-09 | 24, 11 | 0d |  | start no earlier than 2026-04-01 |
| 26 | Basement & Retaining Structure Design |  | 8d | 2026-06-10 | 2026-06-19 | 25 | 369d |  | start no earlier than 2026-04-01 |
| 27 | Superstructure Framing Design |  | 20d | 2026-06-10 | 2026-07-07 | 25, 12 | 0d |  | start no earlier than 2026-04-01 |
| 28 | Structural Calculations & FEM Analysis |  | 15d | 2026-07-08 | 2026-07-28 | 27 | 0d |  | start no earlier than 2026-04-01 |
| 29 | M: Structural Calculations Complete | milestone | 0d | 2026-07-28 | 2026-07-28 | 28 | 0d |  | start no earlier than 2026-04-01 |
| 30 | Precast Concrete & Prefab Element Specifications |  | 8d | 2026-07-29 | 2026-08-07 | 28 | 229d | 71d | start no earlier than 2026-04-01 |
| 31 | Structural IFC Package |  | 8d | 2026-09-09 | 2026-09-18 | 15, 28 | 191d | 0d | start no earlier than 2026-04-01 |
| 32 | M: Structural IFC Package Issued | milestone | 0d | 2026-09-18 | 2026-09-18 | 31 | 191d | 25d | start no earlier than 2026-04-01 |
| 33 | Heating & Cooling Load Analysis |  | 8d | 2026-06-10 | 2026-06-19 | 13 | 42d | 0d | start no earlier than 2026-04-01 |
| 34 | District Heating Connection Design |  | 5d | 2026-06-22 | 2026-06-26 | 33 | 52d | 0d | start no earlier than 2026-04-01 |
| 35 | Mechanical Ventilation System Design |  | 10d | 2026-06-22 | 2026-07-03 | 33 | 42d | 0d | start no earlier than 2026-04-01 |
| 36 | Cooling System Design |  | 8d | 2026-06-22 | 2026-07-01 | 33 | 44d | 2d | start no earlier than 2026-04-01 |
| 37 | Plumbing & Domestic Water System Design |  | 8d | 2026-06-22 | 2026-07-01 | 33 | 44d | 0d | start no earlier than 2026-04-01 |
| 38 | Drainage & Sanitary System Design |  | 5d | 2026-07-02 | 2026-07-08 | 37 | 44d |  | start no earlier than 2026-04-01 |
| 39 | Energy Performance Analysis |  | 5d | 2026-07-06 | 2026-07-10 | 35, 36 | 42d |  | start no earlier than 2026-04-01 |
| 40 | Mechanical IFC Package |  | 8d | 2026-09-09 | 2026-09-18 | 34, 35, 36, 37, 38, 39, 15 | 0d |  | start no earlier than 2026-04-01 |
| 41 | M: Mechanical IFC Package Issued | milestone | 0d | 2026-09-18 | 2026-09-18 | 40 | 171d | 25d | start no earlier than 2026-04-01 |
| 42 | Power Demand Assessment & Utility Connection Design |  | 5d | 2026-06-10 | 2026-06-16 | 13 | 207d | 0d | start no earlier than 2026-04-01 |
| 43 | MV/LV Power Distribution Design |  | 8d | 2026-06-17 | 2026-06-26 | 42 | 207d | 60d | start no earlier than 2026-04-01 |
| 44 | Lighting Design |  | 8d | 2026-09-09 | 2026-09-18 | 15 | 157d | 10d | start no earlier than 2026-04-01 |
| 45 | Fire Alarm & Detection System Design |  | 5d | 2026-09-09 | 2026-09-15 | 15 | 160d | 13d | start no earlier than 2026-04-01 |
| 46 | Security, Access Control & CCTV Design |  | 5d | 2026-09-09 | 2026-09-15 | 15 | 160d | 13d | start no earlier than 2026-04-01 |
| 47 | Data, Communications & AV Design |  | 5d | 2026-09-09 | 2026-09-15 | 15 | 160d | 13d | start no earlier than 2026-04-01 |
| 48 | Building Automation & BMS Design |  | 10d | 2026-09-21 | 2026-10-02 | 40, 43 | 147d | 0d | start no earlier than 2026-04-01 |
| 49 | Electrical IFC Package |  | 8d | 2026-10-05 | 2026-10-14 | 43, 44, 45, 46, 47, 48 | 147d | 0d | start no earlier than 2026-04-01 |
| 50 | M: Electrical IFC Package Issued | milestone | 0d | 2026-10-14 | 2026-10-14 | 49 | 147d | 7d | start no earlier than 2026-04-01 |
| 51 | Site Grading, Drainage & Stormwater Design |  | 8d | 2026-05-06 | 2026-05-15 | 9, 12 | 379d | 0d | start no earlier than 2026-04-01 |
| 52 | Parking, Driveways & Access Road Design |  | 5d | 2026-05-18 | 2026-05-22 | 51 | 379d | 0d | start no earlier than 2026-04-01 |
| 53 | Underground Utilities Routing |  | 5d | 2026-06-29 | 2026-07-03 | 34, 51 | 354d | 0d | start no earlier than 2026-04-01 |
| 54 | Landscaping & External Lighting Design |  | 5d | 2026-05-25 | 2026-05-29 | 52 | 379d | 25d | start no earlier than 2026-04-01 |
| 55 | Civil IFC Package |  | 5d | 2026-07-06 | 2026-07-10 | 53, 54 | 354d | 0d | start no earlier than 2026-04-01 |
| 56 | M: Civil IFC Package Issued | milestone | 0d | 2026-07-10 | 2026-07-10 | 55 | 354d |  | start no earlier than 2026-04-01 |
| 57 | Fire Safety Engineering Report |  | 10d | 2026-09-09 | 2026-09-22 | 15 | 302d |  | start no earlier than 2026-04-01 |
| 58 | Acoustic & Vibration Analysis |  | 8d | 2026-09-09 | 2026-09-18 | 15 | 284d | 41d | start no earlier than 2026-04-01 |
| 59 | Elevator Engineering & Specification |  | 8d | 2026-07-08 | 2026-07-17 | 27 | 163d | 86d | start no earlier than 2026-04-01 |
| 60 | Sustainability Assessment |  | 10d | 2026-09-23 | 2026-10-06 | 39, 16 | 292d |  | start no earlier than 2026-04-01 |
| 61 | Solar PV & Green Roof Technical Specification |  | 5d | 2026-09-23 | 2026-09-29 | 16 | 297d |  | start no earlier than 2026-04-01 |
| 62 | Architectural BIM Model Development |  | 20d | 2026-05-06 | 2026-06-02 | 12 | 93d |  | start no earlier than 2026-04-01 |
| 63 | Structural BIM Model Development |  | 15d | 2026-07-08 | 2026-07-28 | 27 | 53d |  | start no earlier than 2026-04-01 |
| 64 | MEP BIM Model Development |  | 15d | 2026-09-21 | 2026-10-09 | 40 | 0d |  | start no earlier than 2026-04-01 |
| 65 | Multi-Discipline Clash Detection & Coordination |  | 10d | 2026-10-12 | 2026-10-23 | 62, 63, 64 | 0d |  | start no earlier than 2026-04-01 |
| 66 | 4D BIM Schedule Integration |  | 5d | 2026-10-26 | 2026-10-30 | 65 | 274d |  | start no earlier than 2026-04-01 |
| 67 | Model-Based Quantity Take-Off (MTO) for Procurement |  | 8d | 2026-10-26 | 2026-11-04 | 65 | 0d |  | start no earlier than 2026-04-01 |
| 68 | M: Coordinated BIM Model Issued for Construction | milestone | 0d | 2026-10-23 | 2026-10-23 | 65, 17, 32, 41, 50 | 279d |  | start no earlier than 2026-04-01 |
| 69 | MTO Finalization from BIM Model |  | 5d | 2026-11-05 | 2026-11-11 | 67 | 0d |  | start no earlier than 2026-04-01 |
| 70 | Approved Vendor List Compilation |  | 5d | 2026-04-15 | 2026-04-21 | 1 | 146d |  | start no earlier than 2026-04-01 |

| ID | Task | Type | Duration | Start | Finish | Predecessors | Total slack | Free slack | Constraint |
| --- | --- | --- | --- | --- | --- | --- | --- | --- | --- |
| 71 | VDRL Compilation |  | 3d | 2026-11-12 | 2026-11-16 | 69, 70 | 0d |  | start no earlier than 2026-04-01 |
| 72 | M: Procurement Packages Issued | milestone | 0d | 2026-11-16 | 2026-11-16 | 71 | 0d |  | start no earlier than 2026-04-01 |
| 73 | Structural Steel — Tender & Vendor Evaluation |  | 15d | 2026-11-17 | 2026-12-07 | 72, 32 | 150d | 0d | start no earlier than 2026-04-01 |
| 74 | M: Structural Steel — Vendor Award | milestone | 0d | 2026-12-07 | 2026-12-07 | 73 | 150d | 0d | start no earlier than 2026-04-01 |
| 75 | Structural Steel — Shop Drawing Submission & Approval |  | 15d | 2026-12-08 | 2026-12-28 | 74 | 150d | 0d | start no earlier than 2026-04-01 |
| 76 | Structural Steel — Fabrication |  | 30d | 2026-12-29 | 2027-02-08 | 75 | 150d | 0d | start no earlier than 2026-04-01 |
| 77 | Structural Steel — Third-Party Inspection |  | 5d | 2027-02-16 | 2027-02-22 | 76FS+5d | 150d | 0d | start no earlier than 2026-04-01 |
| 78 | Structural Steel — Delivery to Site |  | 3d | 2027-02-23 | 2027-02-25 | 77 | 150d | 0d | start no earlier than 2026-04-01 |
| 79 | M: Structural Steel — Delivered to Site | milestone | 0d | 2027-02-25 | 2027-02-25 | 78 | 150d | 12d | start no earlier than 2026-04-01 |
| 80 | Precast Concrete — Tender & Vendor Award |  | 15d | 2026-11-17 | 2026-12-07 | 72, 30 | 158d | 0d | start no earlier than 2026-04-01 |
| 81 | M: Precast Concrete — Vendor Award | milestone | 0d | 2026-12-07 | 2026-12-07 | 80 | 158d | 0d | start no earlier than 2026-04-01 |
| 82 | Precast Concrete — Production Drawings Approval |  | 10d | 2026-12-08 | 2026-12-21 | 81 | 158d | 0d | start no earlier than 2026-04-01 |
| 83 | Precast Concrete — Factory Production |  | 35d | 2026-12-22 | 2027-02-08 | 82 | 158d | 0d | start no earlier than 2026-04-01 |
| 84 | Precast Concrete — Delivery to Site |  | 5d | 2027-02-09 | 2027-02-15 | 83 | 158d | 0d | start no earlier than 2026-04-01 |
| 85 | M: Precast Concrete — Delivered to Site | milestone | 0d | 2027-02-15 | 2027-02-15 | 84 | 158d | 20d | start no earlier than 2026-04-01 |
| 86 | Facade System — Tender & Vendor Award |  | 20d | 2026-11-17 | 2026-12-14 | 72, 17 | 0d |  | start no earlier than 2026-04-01 |
| 87 | M: Facade — Vendor Award | milestone | 0d | 2026-12-14 | 2026-12-14 | 86 | 0d |  | start no earlier than 2026-04-01 |
| 88 | Facade — Vendor Engineering & Shop Drawings |  | 20d | 2026-12-15 | 2027-01-11 | 87 | 0d |  | start no earlier than 2026-04-01 |
| 89 | Facade — Mock-Up Fabrication & Testing |  | 15d | 2027-01-12 | 2027-02-01 | 88 | 0d |  | start no earlier than 2026-04-01 |
| 90 | Facade — Full Production |  | 50d | 2027-02-02 | 2027-04-12 | 89 | 0d |  | start no earlier than 2026-04-01 |
| 91 | Facade — Phased Delivery to Site |  | 10d | 2027-04-13 | 2027-04-26 | 90 | 0d |  | start no earlier than 2026-04-01 |
| 92 | M: Facade — First Delivery to Site | milestone | 0d | 2027-04-26 | 2027-04-26 | 91 | 0d |  | start no earlier than 2026-04-01 |
| 93 | Elevator — Tender & Vendor Award |  | 15d | 2026-11-17 | 2026-12-07 | 72, 59 | 77d | 0d | start no earlier than 2026-04-01 |
| 94 | M: Elevator — Vendor Award | milestone | 0d | 2026-12-07 | 2026-12-07 | 93 | 77d | 0d | start no earlier than 2026-04-01 |
| 95 | Elevator — Vendor Design & Engineering Approval |  | 15d | 2026-12-08 | 2026-12-28 | 94 | 77d | 0d | start no earlier than 2026-04-01 |
| 96 | Elevator — Manufacturing |  | 100d | 2026-12-29 | 2027-05-17 | 95 | 77d | 0d | start no earlier than 2026-04-01 |
| 97 | Elevator — Delivery to Site |  | 3d | 2027-05-18 | 2027-05-20 | 96 | 77d | 0d | start no earlier than 2026-04-01 |
| 98 | M: Elevator Equipment — Delivered to Site | milestone | 0d | 2027-05-20 | 2027-05-20 | 97 | 77d | 0d | start no earlier than 2026-04-01 |
| 99 | District Heating Substation — Tender, Award & Manufacturing |  | 30d | 2026-11-17 | 2026-12-28 | 72, 41 | 135d | 0d | start no earlier than 2026-04-01 |
| 100 | District Heating Substation — Delivery |  | 3d | 2026-12-29 | 2026-12-31 | 99 | 135d | 0d | start no earlier than 2026-04-01 |
| 101 | AHU — Tender, Award & Manufacturing |  | 40d | 2026-11-17 | 2027-01-11 | 72, 41 | 130d | 0d | start no earlier than 2026-04-01 |
| 102 | AHU — Delivery to Site |  | 3d | 2027-01-12 | 2027-01-14 | 101 | 130d | 0d | start no earlier than 2026-04-01 |
| 103 | Chiller — Tender, Award & Manufacturing |  | 35d | 2026-11-17 | 2027-01-04 | 72, 41 | 133d | 0d | start no earlier than 2026-04-01 |
| 104 | Chiller — FAT & Delivery |  | 5d | 2027-01-05 | 2027-01-11 | 103 | 133d | 3d | start no earlier than 2026-04-01 |
| 105 | BAS/BMS — Tender, Award & Delivery |  | 25d | 2026-11-17 | 2026-12-21 | 72, 50 | 148d | 18d | start no earlier than 2026-04-01 |
| 106 | M: HVAC Major Equipment — All Delivered | milestone | 0d | 2027-01-14 | 2027-01-14 | 100, 102, 104, 105 | 130d | 32d | start no earlier than 2026-04-01 |
| 107 | MV/LV Switchgear — Tender, Award, Manufacturing & FAT |  | 40d | 2026-11-17 | 2027-01-11 | 72, 50 | 124d | 0d | start no earlier than 2026-04-01 |
| 108 | MV/LV Switchgear — Delivery |  | 3d | 2027-01-12 | 2027-01-14 | 107 | 124d | 0d | start no earlier than 2026-04-01 |
| 109 | Transformer — Tender, Manufacturing & Delivery |  | 35d | 2026-11-17 | 2027-01-04 | 72, 50 | 132d | 8d | start no earlier than 2026-04-01 |
| 110 | Emergency Generator / UPS — Tender, Award & Manufacturing |  | 30d | 2026-11-17 | 2026-12-28 | 72 | 227d | 0d | start no earlier than 2026-04-01 |
| 111 | Emergency Generator — Delivery |  | 3d | 2026-12-29 | 2026-12-31 | 110 | 227d | 10d | start no earlier than 2026-04-01 |
| 112 | Fire Alarm Panel — Tender, Award & Delivery |  | 20d | 2026-11-17 | 2026-12-14 | 72, 50 | 175d | 23d | start no earlier than 2026-04-01 |
| 113 | M: Electrical Major Equipment — All Delivered | milestone | 0d | 2027-01-14 | 2027-01-14 | 108, 109, 111, 112 | 220d | 90d | start no earlier than 2026-04-01 |
| 114 | Roofing Membrane System — Procurement & Delivery |  | 15d | 2026-11-17 | 2026-12-07 | 72 | 248d |  | start no earlier than 2026-04-01 |
| 115 | Fire Suppression Equipment — Procurement & Delivery |  | 20d | 2026-11-17 | 2026-12-14 | 72, 41 | 180d | 140d | start no earlier than 2026-04-01 |
| 116 | Solar PV & Inverters — Procurement & Delivery |  | 25d | 2026-11-17 | 2026-12-21 | 72 | 238d |  | start no earlier than 2026-04-01 |
| 117 | Acoustic Glazing & Special Facade Elements |  | 20d | 2026-11-17 | 2026-12-14 | 72, 58 | 243d |  | start no earlier than 2026-04-01 |
| 118 | Access Control & Security Hardware — Procurement |  | 15d | 2026-11-17 | 2026-12-07 | 72, 50 | 195d | 180d | start no earlier than 2026-04-01 |
| 119 | FAT — Mechanical Equipment |  | 5d | 2027-01-12 | 2027-01-18 | 99, 101, 103 | 218d |  | start no earlier than 2026-04-01 |
| 120 | FAT — Electrical Equipment |  | 5d | 2027-01-12 | 2027-01-18 | 107 | 218d |  | start no earlier than 2026-04-01 |
| 121 | TPI — Structural Steel & Precast |  | 5d | 2027-02-09 | 2027-02-15 | 76, 83 | 198d |  | start no earlier than 2026-04-01 |
| 122 | Shipping & Logistics Coordination |  | 10d | 2026-11-17 | 2026-11-30 | 72 | 238d | 0d | start no earlier than 2026-04-01 |
| 123 | Site Receiving, Inspection & Storage |  | 15d | 2026-12-01 | 2026-12-21 | 122 | 238d | 108d | start no earlier than 2026-04-01 |
| 124 | M: All Long Lead Items Received on Site | milestone | 0d | 2027-05-20 | 2027-05-20 | 79, 85, 92, 98, 106, 113, 123 | 130d |  | start no earlier than 2026-04-01 |
| 125 | Site Handover from Client & Boundary Survey |  | 3d | 2026-09-02 | 2026-09-04 | 6 | 4d | 0d | start no earlier than 2026-04-01 |
| 126 | Temporary Site Facilities Setup |  | 5d | 2026-09-07 | 2026-09-11 | 125 | 4d | 0d | start no earlier than 2026-04-01 |
| 127 | Key Subcontractor Mobilization |  | 5d | 2026-09-07 | 2026-09-11 | 125 | 4d | 0d | start no earlier than 2026-04-01 |
| 128 | M: Site Mobilization Complete | milestone | 0d | 2026-09-11 | 2026-09-11 | 126, 127 | 4d | 0d | start no earlier than 2026-04-01 |
| 129 | Existing Structures & Vegetation Clearing |  | 5d | 2026-09-14 | 2026-09-18 | 128 | 4d | 0d | start no earlier than 2026-04-01 |
| 130 | Contaminated Material Removal & Disposal |  | 5d | 2026-09-21 | 2026-09-25 | 129 | 4d | 0d | start no earlier than 2026-04-01 |
| 131 | Utility Diversions & Disconnections |  | 5d | 2026-09-21 | 2026-09-25 | 129 | 4d | 0d | start no earlier than 2026-04-01 |
| 132 | Bulk Earthworks & Rough Grading |  | 10d | 2026-09-28 | 2026-10-09 | 130, 131 | 4d | 0d | start no earlier than 2026-04-01 |
| 133 | Dewatering System Installation |  | 3d | 2026-10-12 | 2026-10-14 | 132 | 4d | 0d | start no earlier than 2026-04-01 |
| 134 | Piling Works |  | 30d | 2026-10-15 | 2026-11-25 | 133 | 4d | 0d | start no earlier than 2026-04-01 |
| 135 | Piling Load Testing & Inspection |  | 5d | 2026-11-26 | 2026-12-02 | 134 | 4d | 0d | start no earlier than 2026-04-01 |
| 136 | M: Piling Works Complete & Approved | milestone | 0d | 2026-12-02 | 2026-12-02 | 135 | 4d | 0d | start no earlier than 2026-04-01 |
| 137 | Basement Excavation & Shoring |  | 15d | 2026-12-03 | 2026-12-23 | 136 | 4d | 0d | start no earlier than 2026-04-01 |
| 138 | Basement Retaining Walls Construction |  | 10d | 2026-12-24 | 2027-01-06 | 137 | 4d | 0d | start no earlier than 2026-04-01 |
| 139 | Foundation Waterproofing & Drainage Layer |  | 5d | 2027-01-07 | 2027-01-13 | 138 | 4d | 0d | start no earlier than 2026-04-01 |
| 140 | Foundation Pile Caps & Ground Beams |  | 10d | 2027-01-14 | 2027-01-27 | 139 | 4d | 0d | start no earlier than 2026-04-01 |

| ID | Task | Type | Duration | Start | Finish | Predecessors | Total slack | Free slack | Constraint |
| --- | --- | --- | --- | --- | --- | --- | --- | --- | --- |
| 141 | Foundation Slab — Formwork, Reinforcement & Concrete |  | 10d | 2027-01-28 | 2027-02-10 | 140 | 4d | 0d | start no earlier than 2026-04-01 |
| 142 | M: Foundation Works Complete | milestone | 0d | 2027-02-10 | 2027-02-10 | 141 | 4d | 0d | start no earlier than 2026-04-01 |
| 143 | Ground Floor Slab & Podium Structure |  | 8d | 2027-02-11 | 2027-02-22 | 142 | 4d | 0d | start no earlier than 2026-04-01 |
| 144 | Concrete Core Walls — Progressive Floors |  | 50d | 2027-02-23 | 2027-05-03 | 143 | 4d | 0d | start no earlier than 2026-04-01 |
| 145 | Structural Frame — Floors 1 to N |  | 45d | 2027-03-02 | 2027-05-03 | 143FS+5d | 4d | 0d | start no earlier than 2026-04-01 |
| 146 | Precast Floor Plank Installation — Typical Floors |  | 30d | 2027-03-16 | 2027-04-26 | 145SS+10d, 79, 85 | 138d | 0d | start no earlier than 2026-04-01 |
| 147 | In-Situ Concrete Topping Pours — Typical Floors |  | 25d | 2027-04-06 | 2027-05-10 | 146SS+15d | 138d | 5d | start no earlier than 2026-04-01 |
| 148 | Roof Structural Frame & Penthouse |  | 10d | 2027-05-04 | 2027-05-17 | 144, 145 | 4d | 0d | start no earlier than 2026-04-01 |
| 149 | M: Structural Topping Out | milestone | 0d | 2027-05-17 | 2027-05-17 | 148, 147 | 133d |  | start no earlier than 2026-04-01 |
| 150 | External Wall Thermal Insulation |  | 20d | 2027-03-09 | 2027-04-05 | 143FS+10d | 30d |  | start no earlier than 2026-04-01 |
| 151 | Curtain Wall / Facade Installation — Phased |  | 40d | 2027-04-27 | 2027-06-21 | 150SS+5d, 92 | 0d |  | start no earlier than 2026-04-01 |
| 152 | Window & Glazing Installation |  | 10d | 2027-06-01 | 2027-06-14 | 151SS+25d | 5d |  | start no earlier than 2026-04-01 |
| 153 | Roof Waterproofing Membrane Installation |  | 8d | 2027-05-21 | 2027-06-01 | 148FS+3d | 4d | 0d | start no earlier than 2026-04-01 |
| 154 | Roof Thermal Insulation & Finishing |  | 5d | 2027-06-02 | 2027-06-08 | 153 | 4d | 0d | start no earlier than 2026-04-01 |
| 155 | Roof Penetrations, Flashings & Edge Details |  | 5d | 2027-06-09 | 2027-06-15 | 154 | 4d |  | start no earlier than 2026-04-01 |
| 156 | M: Building Weathertight & Enclosed | milestone | 0d | 2027-06-21 | 2027-06-21 | 151, 155, 152 | 0d |  | start no earlier than 2026-04-01 |
| 157 | Underground Service Trenches |  | 10d | 2026-10-12 | 2026-10-23 | 132 | 274d | 0d | start no earlier than 2026-04-01 |
| 158 | District Heating Connection to Building |  | 5d | 2027-01-01 | 2027-01-07 | 157, 100 | 225d |  | start no earlier than 2026-04-01 |
| 159 | Water & Sewer Connection to City Network |  | 5d | 2026-10-26 | 2026-10-30 | 157 | 274d |  | start no earlier than 2026-04-01 |
| 160 | Stormwater Management System Installation |  | 5d | 2026-10-26 | 2026-10-30 | 157 | 274d |  | start no earlier than 2026-04-01 |
| 161 | Parking Area Base Course, Paving & Markings |  | 10d | 2027-06-22 | 2027-07-05 | 156 | 89d | 0d | start no earlier than 2026-04-01 |
| 162 | Access Roads & Pedestrian Paths |  | 8d | 2027-06-25 | 2027-07-06 | 161SS+3d | 89d | 0d | start no earlier than 2026-04-01 |
| 163 | External Lighting Installation |  | 5d | 2027-07-07 | 2027-07-13 | 162 | 92d | 3d | start no earlier than 2026-04-01 |
| 164 | Landscaping & Soft Landscaping |  | 8d | 2027-07-07 | 2027-07-16 | 162 | 89d | 0d | start no earlier than 2026-04-01 |
| 165 | M: External Works Complete | milestone | 0d | 2027-07-16 | 2027-07-16 | 163, 164 | 89d |  | start no earlier than 2026-04-01 |
| 166 | Underground Mechanical Piping (Pre-Slab) |  | 5d | 2027-02-11 | 2027-02-17 | 141 | 196d |  | start no earlier than 2026-04-01 |
| 167 | District Heating Substation Installation & Connection |  | 5d | 2027-02-23 | 2027-03-01 | 143, 100 | 98d | 0d | start no earlier than 2026-04-01 |
| 168 | Riser Piping — Heating & Cooling Mains |  | 20d | 2027-03-02 | 2027-03-29 | 167, 106 | 98d | 85d | start no earlier than 2026-04-01 |
| 169 | HVAC Ductwork — Lower Floors |  | 20d | 2027-06-29 | 2027-07-26 | 156SS+5d, 106 | 13d | 0d | start no earlier than 2026-04-01 |
| 170 | HVAC Ductwork — Upper Floors |  | 20d | 2027-07-13 | 2027-08-09 | 169SS+10d | 18d | 5d | start no earlier than 2026-04-01 |
| 171 | AHU Installation & Connections |  | 8d | 2027-06-22 | 2027-07-01 | 156, 102 | 57d | 42d | start no earlier than 2026-04-01 |
| 172 | Chiller / Cooling Plant Installation |  | 5d | 2027-06-22 | 2027-06-28 | 156, 104 | 60d | 45d | start no earlier than 2026-04-01 |
| 173 | Domestic Hot & Cold Water Piping |  | 20d | 2027-06-29 | 2027-07-26 | 156SS+5d, 106 | 13d | 0d | start no earlier than 2026-04-01 |
| 174 | Sanitary & Drainage Piping |  | 15d | 2027-07-06 | 2027-07-26 | 173SS+5d | 40d | 3d | start no earlier than 2026-04-01 |
| 175 | Fire Sprinkler System Installation |  | 20d | 2027-06-29 | 2027-07-26 | 156SS+5d, 115 | 40d | 25d | start no earlier than 2026-04-01 |
| 176 | Mechanical Insulation (Pipes & Ducts) |  | 15d | 2027-07-27 | 2027-08-16 | 168, 169, 173 | 13d | 0d | start no earlier than 2026-04-01 |
| 177 | HVAC Terminal Units, Diffusers & Grilles |  | 10d | 2027-08-17 | 2027-08-30 | 170, 176 | 13d | 0d | start no earlier than 2026-04-01 |
| 178 | M: Mechanical Works Installation Complete | milestone | 0d | 2027-08-30 | 2027-08-30 | 171, 172, 174, 175, 177 | 15d |  | start no earlier than 2026-04-01 |
| 179 | Underground LV Cables & Ducts Installation |  | 5d | 2027-02-11 | 2027-02-17 | 141 | 196d |  | start no earlier than 2026-04-01 |
| 180 | Transformer & MV Switchgear Room Installation |  | 5d | 2027-02-23 | 2027-03-01 | 143, 108, 109 | 97d | 0d | start no earlier than 2026-04-01 |
| 181 | Main LV Switchgear Installation |  | 3d | 2027-03-02 | 2027-03-04 | 180 | 97d |  | start no earlier than 2026-04-01 |
| 182 | Emergency Generator & UPS Installation |  | 3d | 2027-02-23 | 2027-02-25 | 143, 111 | 190d |  | start no earlier than 2026-04-01 |
| 183 | Cable Trays, Conduits & Containment — All Floors |  | 25d | 2027-06-29 | 2027-08-02 | 156SS+5d | 0d |  | start no earlier than 2026-04-01 |
| 184 | Main Power Feeder Cables |  | 10d | 2027-07-20 | 2027-08-02 | 181, 183SS+15d | 0d |  | start no earlier than 2026-04-01 |
| 185 | Distribution Boards & Sub-Boards Installation |  | 10d | 2027-08-03 | 2027-08-16 | 184 | 0d |  | start no earlier than 2026-04-01 |
| 186 | Lighting System Installation |  | 15d | 2027-08-17 | 2027-09-06 | 185 | 0d |  | start no earlier than 2026-04-01 |
| 187 | Small Power, Outlets & Floor Boxes |  | 15d | 2027-08-17 | 2027-09-06 | 185 | 10d |  | start no earlier than 2026-04-01 |
| 188 | Fire Alarm & Detection System Installation |  | 15d | 2027-07-13 | 2027-08-02 | 183SS+10d, 112 | 25d |  | start no earlier than 2026-04-01 |
| 189 | Security, Access Control & CCTV Installation |  | 10d | 2027-08-17 | 2027-08-30 | 185, 118 | 15d |  | start no earlier than 2026-04-01 |
| 190 | Data, Communications & AV Cabling |  | 10d | 2027-08-17 | 2027-08-30 | 185 | 15d |  | start no earlier than 2026-04-01 |
| 191 | BMS/BAS Installation & Programming |  | 10d | 2027-09-07 | 2027-09-20 | 186, 188, 105 | 0d |  | start no earlier than 2026-04-01 |
| 192 | Earthing & Lightning Protection System |  | 5d | 2027-07-06 | 2027-07-12 | 183SS+5d | 50d |  | start no earlier than 2026-04-01 |
| 193 | M: Electrical Works Installation Complete | milestone | 0d | 2027-09-20 | 2027-09-20 | 186, 187, 189, 190, 191, 192 | 0d |  | start no earlier than 2026-04-01 |
| 194 | Elevator Pit & Shaft Final Preparation |  | 3d | 2027-02-11 | 2027-02-15 | 142, 95 | 145d | 68d | start no earlier than 2026-04-01 |
| 195 | Guide Rail & Counterweight Installation |  | 10d | 2027-05-21 | 2027-06-03 | 194, 98 | 77d | 0d | start no earlier than 2026-04-01 |
| 196 | MRL Equipment Installation |  | 5d | 2027-06-04 | 2027-06-10 | 195 | 77d | 0d | start no earlier than 2026-04-01 |
| 197 | Elevator Car & Door Installation |  | 5d | 2027-06-11 | 2027-06-17 | 196 | 77d | 42d | start no earlier than 2026-04-01 |
| 198 | Elevator Wiring & Control Panel |  | 5d | 2027-08-17 | 2027-08-23 | 197, 185 | 35d | 0d | start no earlier than 2026-04-01 |
| 199 | Elevator Testing & Authority Inspection |  | 5d | 2027-08-24 | 2027-08-30 | 198 | 35d | 0d | start no earlier than 2026-04-01 |
| 200 | M: Elevators Commissioned & Certified | milestone | 0d | 2027-08-30 | 2027-08-30 | 199 | 35d | 0d | start no earlier than 2026-04-01 |
| 201 | Internal Partition Walls |  | 20d | 2027-06-22 | 2027-07-19 | 156, 23 | 38d | 0d | start no earlier than 2026-04-01 |
| 202 | Internal Doors, Frames & Hardware |  | 10d | 2027-07-13 | 2027-07-26 | 201SS+15d | 38d | 0d | start no earlier than 2026-04-01 |
| 203 | Raised Access Flooring |  | 10d | 2027-07-06 | 2027-07-19 | 201SS+10d | 58d | 0d | start no earlier than 2026-04-01 |
| 204 | Floor Screeds & Substrate Preparation |  | 10d | 2027-07-06 | 2027-07-19 | 201SS+10d | 50d | 0d | start no earlier than 2026-04-01 |
| 205 | Floor Finishes — Office Areas |  | 10d | 2027-07-20 | 2027-08-02 | 203 | 58d | 50d | start no earlier than 2026-04-01 |
| 206 | Floor Finishes — Wet Areas, Lobby & Common Areas |  | 8d | 2027-07-20 | 2027-07-29 | 204 | 50d | 0d | start no earlier than 2026-04-01 |
| 207 | Wall Finishes — Painting, Tiling & Feature Cladding |  | 15d | 2027-07-27 | 2027-08-16 | 202 | 38d | 0d | start no earlier than 2026-04-01 |
| 208 | Suspended Ceiling Systems |  | 15d | 2027-09-07 | 2027-09-27 | 177, 186, 201SS+15d | 8d | 0d | start no earlier than 2026-04-01 |
| 209 | Toilet & Bathroom Fit-Out |  | 10d | 2027-07-30 | 2027-08-12 | 206, 174 | 50d | 42d | start no earlier than 2026-04-01 |
| 210 | Reception, Lobby & Common Area Fit-Out |  | 10d | 2027-09-28 | 2027-10-11 | 206, 208 | 8d | 0d | start no earlier than 2026-04-01 |

| ID | Task | Type | Duration | Start | Finish | Predecessors | Total slack | Free slack | Constraint |
| --- | --- | --- | --- | --- | --- | --- | --- | --- | --- |
| 211 | Joinery, Millwork & Built-In Furniture |  | 10d | 2027-09-28 | 2027-10-11 | 207, 208 | 8d | 0d | start no earlier than 2026-04-01 |
| 212 | Wayfinding & Signage Installation |  | 3d | 2027-08-17 | 2027-08-19 | 207 | 45d | 37d | start no earlier than 2026-04-01 |
| 213 | M: Interior Fit-Out Substantially Complete | milestone | 0d | 2027-10-11 | 2027-10-11 | 205, 209, 210, 211, 212 | 8d |  | start no earlier than 2026-04-01 |
| 214 | Pre-Commissioning Walkdowns & Punch List |  | 5d | 2027-09-21 | 2027-09-27 | 178, 193 | 0d |  | start no earlier than 2026-04-01 |
| 215 | HVAC Commissioning, Balancing & Air Volume Testing |  | 10d | 2027-09-28 | 2027-10-11 | 214 | 0d |  | start no earlier than 2026-04-01 |
| 216 | Heating System Pressure & Performance Testing |  | 5d | 2027-09-28 | 2027-10-04 | 214 | 13d |  | start no earlier than 2026-04-01 |
| 217 | Electrical Systems Testing & Functional Checks |  | 8d | 2027-09-28 | 2027-10-07 | 214 | 2d |  | start no earlier than 2026-04-01 |
| 218 | Fire Alarm System Integrated Testing |  | 5d | 2027-09-28 | 2027-10-04 | 214, 8 | 13d |  | start no earlier than 2026-04-01 |
| 219 | Sprinkler System Commissioning & Hydraulic Testing |  | 5d | 2027-09-28 | 2027-10-04 | 214 | 13d |  | start no earlier than 2026-04-01 |
| 220 | BMS/BAS Integrated Functional Testing |  | 8d | 2027-10-12 | 2027-10-21 | 215, 217, 191 | 0d |  | start no earlier than 2026-04-01 |
| 221 | Elevator Final Commissioning & Witness Inspection |  | 3d | 2027-08-31 | 2027-09-02 | 200 | 35d |  | start no earlier than 2026-04-01 |
| 222 | Acoustic & Indoor Environment Quality Testing |  | 3d | 2027-10-12 | 2027-10-14 | 215 | 5d |  | start no earlier than 2026-04-01 |
| 223 | Building Airtightness Test |  | 2d | 2027-06-22 | 2027-06-23 | 156 | 86d |  | start no earlier than 2026-04-01 |
| 224 | M: Integrated Systems Commissioning Complete | milestone | 0d | 2027-10-21 | 2027-10-21 | 220, 218, 219, 221, 222, 223, 216 | 0d |  | start no earlier than 2026-04-01 |
| 225 | Final Punch List Rectification Works |  | 10d | 2027-10-22 | 2027-11-04 | 213, 224 | 0d |  | start no earlier than 2026-04-01 |
| 226 | As-Built Drawings & BIM Model Finalization |  | 10d | 2027-10-22 | 2027-11-04 | 224 | 8d |  | start no earlier than 2026-04-01 |
| 227 | O&M Manuals Compilation |  | 8d | 2027-10-22 | 2027-11-02 | 224 | 10d |  | start no earlier than 2026-04-01 |
| 228 | Spare Parts Delivery & Inventory |  | 3d | 2027-10-22 | 2027-10-26 | 224 | 15d |  | start no earlier than 2026-04-01 |
| 229 | Client & FM Team Training |  | 5d | 2027-10-22 | 2027-10-28 | 224 | 13d |  | start no earlier than 2026-04-01 |
| 230 | Authority Final Inspection |  | 3d | 2027-11-05 | 2027-11-09 | 225 | 0d |  | start no earlier than 2026-04-01 |
| 231 | Occupancy Permit Receipt |  | 5d | 2027-11-10 | 2027-11-16 | 230 | 0d |  | start no earlier than 2026-04-01 |
| 232 | M: Practical Completion | milestone | 0d | 2027-11-16 | 2027-11-16 | 231 | 0d |  | start no earlier than 2026-04-01 |
| 233 | Client Handover, Keys & Documentation Transfer |  | 2d | 2027-11-17 | 2027-11-18 | 226, 227, 228, 229, 232 | 0d |  | start no earlier than 2026-04-01 |
| 234 | M: Project Handover Complete — DLP Commences | milestone | 0d | 2027-11-18 | 2027-11-18 | 233 | 0d |  | start no earlier than 2026-04-01 |
