# Aurora Tower Helsinki

Schedule from MS Project, 2026-04-21 to 2028-05-30.

## Calendars

- Standard: Mon-Fri 08:00-12:00, 13:00-17:00; Sat-Sun off.

## Schedule

| ID | Task | Type | Duration | Start | Finish | Predecessors | Total slack | Free slack | Work |
| --- | --- | --- | --- | --- | --- | --- | --- | --- | --- |
| 1 | Project Start | milestone | 0d | 2026-04-21 | 2026-04-21 |  | 0d |  |  |
| 2 | Design Start | milestone | 0d | 2026-04-21 | 2026-04-21 | 1 | 0d |  |  |
| 3 | Geotechnical Investigation & Rock-Socketed Pile Design |  | 20d | 2026-04-21 | 2026-05-18 | 2 | 20d |  | 160h |
| 4 | Concept Design Development & BREEAM Strategy |  | 25d | 2026-04-21 | 2026-05-25 | 2 | 0d |  | 200h |
| 5 | Schematic Design & Specialist Consultant Interfaces |  | 30d | 2026-05-26 | 2026-07-06 | 4, 3SS+5d | 0d |  | 240h |
| 6 | Concept & Schematic Phase Complete | milestone | 0d | 2026-07-06 | 2026-07-06 | 5 | 0d |  |  |
| 7 | Building Permit Application (Omgevingsvergunning) Preparation |  | 40d | 2026-07-07 | 2026-08-31 | 6 | 0d |  | 320h |
| 8 | M: Building Permit Submitted | milestone | 0d | 2026-08-31 | 2026-08-31 | 7 | 0d |  |  |
| 9 | Procurement Start | milestone | 0d | 2026-08-31 | 2026-08-31 | 1, 8SS | 0d |  |  |
| 10 | Civil & Structural Start | milestone | 0d | 2026-08-31 | 2026-08-31 | 1, 8 | 15d | 0d |  |
| 11 | Site Establishment & Winter Protection Setup |  | 15d | 2026-09-01 | 2026-09-21 | 10 | 15d | 0d | 120h |
| 12 | Specifications & Tender Package Preparation |  | 20d | 2026-09-01 | 2026-09-28 | 9 | 0d |  | 160h |
| 13 | Detailed Design Development (Hybrid Frame & MEP) |  | 45d | 2026-09-01 | 2026-11-02 | 6, 8SS | 0d |  | 360h |
| 14 | Utility Diversions (District Heating, Water, Power) |  | 25d | 2026-09-08 | 2026-10-12 | 11SS+5d | 15d | 0d | 200h |
| 15 | Piling (Rock-socketed RR Piles) |  | 35d | 2026-09-22 | 2026-11-09 | 11, 14SS+10d, 3 | 15d | 0d | 280h |
| 16 | Pre-fab Prestressed Spine Beam Fabrication Drawings |  | 15d | 2026-09-29 | 2026-10-19 | 13SS+20d | 10d |  | 120h |
| 17 | Vendor Pre-qualification & Bidding |  | 30d | 2026-09-29 | 2026-11-09 | 12 | 0d |  | 240h |
| 18 | Basement Excavation & RC Walls |  | 40d | 2026-10-13 | 2026-12-07 | 15SS+15d | 15d | 0d | 320h |
| 19 | M: Structural IFC Package Complete | milestone | 0d | 2026-11-02 | 2026-11-02 | 13, 16 | 0d |  |  |
| 20 | Steel Composite Deck & Level 4 Transfer Beam Shop Drawings |  | 20d | 2026-11-03 | 2026-11-30 | 19 | 0d |  | 160h |
| 21 | Facade Carrier Frame Design & Survey Coordination |  | 25d | 2026-11-03 | 2026-12-07 | 13, 19SS | 81d | 0d | 200h |
| 22 | MEP IFC Drawings & Coordination (AHUs/Chillers) |  | 35d | 2026-11-03 | 2026-12-21 | 13 | 76d | 0d | 280h |
| 23 | Subcontractor Selection & Contract Award |  | 15d | 2026-11-10 | 2026-11-30 | 17 | 0d |  | 120h |
| 24 | BIM Coordination & Clash Detection (All Disciplines) |  | 50d | 2026-11-10 | 2027-01-18 | 22SS+5d, 20SS+5d, 21SS+5d | 81d | 0d | 400h |
| 25 | Contracts Finalized | milestone | 0d | 2026-11-30 | 2026-11-30 | 23 | 0d |  |  |
| 26 | Structural Steel & Composite Deck Fabrication |  | 75d | 2026-12-01 | 2027-03-15 | 25, 20 | 0d |  | 600h |
| 27 | Pre-fab Prestressed Spine Beams Order & Fabrication |  | 90d | 2026-12-01 | 2027-04-05 | 25, 16 | 10d | 0d | 720h |
| 28 | Foundations Complete | milestone | 0d | 2026-12-07 | 2026-12-07 | 15, 18 | 15d | 0d |  |
| 29 | Facade Carrier Frame & Panel Procurement |  | 60d | 2026-12-08 | 2027-03-01 | 25, 21 | 126d | 10d | 480h |
| 30 | In-situ RC Core Construction (Jump-form) - L0 to L13 |  | 120d | 2026-12-08 | 2027-05-24 | 28 | 15d | 5d | 960h |
| 31 | MEP (Mechanical, Electrical, Plumbing) Start | milestone | 0d | 2026-12-21 | 2026-12-21 | 1, 22 | 101d | 20d |  |
| 32 | Interior Fit-out & Architectural IFC Documentation |  | 30d | 2026-12-22 | 2027-02-01 | 22, 24SS+20d | 346d | 0d | 240h |
| 33 | MEP Plant (AHUs, Chillers) Order & Tracking |  | 120d | 2026-12-22 | 2027-06-07 | 25, 22 | 76d | 0d | 960h |
| 34 | Intermediate Milestone: Long-Lead Orders Placed | milestone | 0d | 2026-12-28 | 2026-12-28 | 27SS+5d, 26SS+5d, 33SS+5d, 29SS+5d | 371d | 115d |  |
| 35 | Erection of Pre-fab Columns & Beams - L0 to L4 |  | 30d | 2027-01-12 | 2027-02-22 | 30SS+20d, 28, 27SS+30d, 26SS+20d | 10d | 0d | 240h |
| 36 | MEP Design Coordination & BIM Modeling (L1-L13) |  | 45d | 2027-01-19 | 2027-03-22 | 31, 24 | 81d | 0d | 360h |
| 37 | Hollow-core Slab & In-situ Topping - L0 to L4 |  | 25d | 2027-01-26 | 2027-03-01 | 35SS+10d | 10d |  | 200h |
| 38 | Design Complete | milestone | 0d | 2027-02-01 | 2027-02-01 | 39 | 346d |  |  |
| 39 | IFC Documentation Finalized | milestone | 0d | 2027-02-01 | 2027-02-01 | 24FF, 32 | 346d | 0d |  |
| 40 | Installation of Composite Steel Transfer Beam (Level 4) |  | 12d | 2027-03-16 | 2027-03-31 | 35, 37, 26 | 0d |  | 96h |
| 41 | Basement Utility Diversions (District Heating & Water) |  | 20d | 2027-03-23 | 2027-04-19 | 36, 14 | 81d | 0d | 160h |
| 42 | Transfer Beam Propping & Curing Period |  | 14d | 2027-04-01 | 2027-04-20 | 40 | 0d |  | 112h |
| 43 | Underground Drainage & Earthing Installation |  | 15d | 2027-04-20 | 2027-05-10 | 41, 18SS+20d | 81d | 0d | 120h |
| 44 | Transfer Level Secured | milestone | 0d | 2027-04-20 | 2027-04-20 | 42 | 0d |  |  |
| 45 | Erection of Pre-fab Columns & Beams - L5 to L12 |  | 55d | 2027-04-21 | 2027-07-06 | 44, 30SS+60d, 27 | 0d |  | 440h |
| 46 | Substructure MEP Complete | milestone | 0d | 2027-05-10 | 2027-05-10 | 43 | 81d | 0d |  |
| 47 | Substructure Complete | milestone | 0d | 2027-05-10 | 2027-05-10 | 28, 46 | 276d |  |  |
| 48 | MEP First Fix - Vertical Risers (Mechanical & Electrical) |  | 60d | 2027-05-11 | 2027-08-02 | 46, 36, 30SS+40d | 81d | 0d | 480h |
| 49 | Hollow-core Slab & In-situ Topping - L5 to L12 |  | 50d | 2027-05-12 | 2027-07-20 | 45SS+15d | 0d |  | 400h |
| 50 | HVAC Ductwork & Pipework Rough-in (L1-L6) |  | 40d | 2027-06-01 | 2027-07-26 | 48SS+15d, 37 | 81d | 0d | 320h |
| 51 | Procurement Complete | milestone | 0d | 2027-06-07 | 2027-06-07 | 52 | 256d |  |  |
| 52 | Manufacturing Phase Complete | milestone | 0d | 2027-06-07 | 2027-06-07 | 27, 26, 33, 29, 34 | 256d | 0d |  |
| 53 | Procurement of Long-Lead MEP Plant (AHUs, Chillers, Heat Pumps) |  | 120d | 2027-06-08 | 2027-11-22 | 36SS+10d, 33 | 76d | 41d | 960h |
| 54 | Roof Structural Slab & Parapets |  | 15d | 2027-07-21 | 2027-08-10 | 30, 45, 49 | 0d |  | 120h |
| 55 | HVAC Ductwork & Pipework Rough-in (L7-L12) |  | 40d | 2027-07-27 | 2027-09-20 | 50, 49SS+20d | 81d |  | 320h |
| 56 | Superstructure Complete | milestone | 0d | 2027-08-10 | 2027-08-10 | 54 | 0d |  |  |
| 57 | Superstructure Complete | milestone | 0d | 2027-08-10 | 2027-08-10 | 56 | 210d |  |  |
| 58 | Facade Carrier Frame & Insulation Installation |  | 60d | 2027-08-25 | 2027-11-16 | 56SS+10d, 49SS+20d, 29 | 0d |  | 480h |
| 59 | Architectural & Interior Finishes Start | milestone | 0d | 2027-09-14 | 2027-09-14 | 1, 58SS+15d | 0d |  |  |
| 60 | Internal Masonry & Blockwork - Basement & Ground |  | 18d | 2027-09-15 | 2027-10-08 | 59, 28 | 0d |  | 144h |
| 61 | Drywall Partitions & Metal Studs - Levels 1-6 |  | 35d | 2027-09-22 | 2027-11-09 | 60SS+5d, 37 | 0d |  | 280h |
| 62 | Electrical Containment & Cabling First Fix (L1-L6) |  | 40d | 2027-09-29 | 2027-11-23 | 50SS+5d, 61SS+5d | 0d |  | 320h |
| 63 | Wet Area Waterproofing & Floor Screeding |  | 20d | 2027-10-11 | 2027-11-05 | 60, 61SS+10d, 43 | 57d | 0d | 160h |
| 64 | Drywall Partitions & Metal Studs - Levels 7-12 |  | 35d | 2027-10-13 | 2027-11-30 | 61SS+15d, 49 | 20d |  | 280h |
| 65 | Flood Testing & Waterproofing QC Inspection | milestone | 0d | 2027-11-05 | 2027-11-05 | 63 | 57d | 52d |  |
| 66 | Civil & Structural Complete | milestone | 0d | 2027-11-16 | 2027-11-16 | 56, 58 | 140d |  |  |
| 67 | Envelope Watertight | milestone | 0d | 2027-11-16 | 2027-11-16 | 58, 54 | 140d |  |  |
| 68 | Internal Plastering & Skimming |  | 40d | 2027-11-24 | 2028-01-18 | 61, 64SS+10d, 62 | 0d |  | 320h |
| 69 | Electrical Containment & Cabling First Fix (L7-L12) |  | 40d | 2027-11-24 | 2028-01-18 | 55SS+5d, 62, 64SS+5d | 0d |  | 320h |
| 70 | Wet Works & Partitions Complete | milestone | 0d | 2028-01-18 | 2028-01-18 | 68, 65 | 5d | 0d |  |

| ID | Task | Type | Duration | Start | Finish | Predecessors | Total slack | Free slack | Work |
| --- | --- | --- | --- | --- | --- | --- | --- | --- | --- |
| 71 | MEP First Fix Complete | milestone | 0d | 2028-01-18 | 2028-01-18 | 48, 69 | 0d |  |  |
| 72 | MEP Rough-In Complete | milestone | 0d | 2028-01-18 | 2028-01-18 | 71 | 95d |  |  |
| 73 | Main Switchgear & Transformer Installation |  | 10d | 2028-01-19 | 2028-02-01 | 53, 71, 18 | 35d | 10d | 80h |
| 74 | Roof Plant Installation (AHUs & Cooling Towers) |  | 15d | 2028-01-19 | 2028-02-08 | 53, 71, 54 | 40d | 15d | 120h |
| 75 | Floor Tiling & Stone Works - Lobbies & Wet Areas |  | 30d | 2028-01-19 | 2028-02-29 | 65, 70SS | 5d | 0d | 240h |
| 76 | MEP Second Fix - Terminals, Lighting & Sanitaryware |  | 55d | 2028-01-19 | 2028-04-04 | 71, 68 | 0d |  | 440h |
| 77 | Raised Access Flooring - Office Zones |  | 45d | 2028-01-26 | 2028-03-28 | 70SS+5d, 69 | 10d | 0d | 360h |
| 78 | Internal Doors & Ironmongery Installation |  | 25d | 2028-02-02 | 2028-03-07 | 68, 75SS+10d | 5d | 0d | 200h |
| 79 | Suspended Ceiling Grid & Acoustic Panels |  | 50d | 2028-02-09 | 2028-04-18 | 68SS+20d, 77SS+10d, 76SS+15d | 10d | 0d | 400h |
| 80 | BMS & Fire Alarm System Integration |  | 30d | 2028-02-16 | 2028-03-28 | 73, 76SS+20d | 25d | 0d | 240h |
| 81 | Building Energisation & Water Connection | milestone | 0d | 2028-02-29 | 2028-02-29 | 73, 80SS+10d | 25d | 0d |  |
| 82 | Plant & Systems Ready for Testing | milestone | 0d | 2028-02-29 | 2028-02-29 | 74, 81 | 25d |  |  |
| 83 | Custom Joinery & Reception Desk Fit-out |  | 15d | 2028-03-01 | 2028-03-21 | 75, 78SS+10d | 35d | 20d | 120h |
| 84 | Internal Painting & Wall Finishes |  | 40d | 2028-03-08 | 2028-05-02 | 79SS+15d, 78 | 5d | 0d | 320h |
| 85 | Sanitaryware & Bathroom Fixtures Installation |  | 20d | 2028-04-05 | 2028-05-02 | 75, 76 | 5d | 0d | 160h |
| 86 | MEP Pressure Testing, Flushing & Balancing |  | 25d | 2028-04-05 | 2028-05-09 | 82, 76 | 0d |  | 200h |
| 87 | Major Fit-out Substantially Complete | milestone | 0d | 2028-04-18 | 2028-04-18 | 79, 83 | 15d | 10d |  |
| 88 | Final Cleaning & Snagging |  | 15d | 2028-05-03 | 2028-05-23 | 84, 85, 87 | 5d | 0d | 120h |
| 89 | Integrated Systems Testing (IST) |  | 15d | 2028-05-10 | 2028-05-30 | 86, 80 | 0d |  | 120h |
| 90 | Architectural & Interior Finishes Complete | milestone | 0d | 2028-05-23 | 2028-05-23 | 88 | 5d | 0d |  |
| 91 | Interior Fit-Out Complete | milestone | 0d | 2028-05-23 | 2028-05-23 | 90 | 5d |  |  |
| 92 | MEP (Mechanical, Electrical, Plumbing) Complete | milestone | 0d | 2028-05-30 | 2028-05-30 | 89 | 0d |  |  |
| 93 | Project Completion | milestone | 0d | 2028-05-30 | 2028-05-30 | 38, 51, 66, 90, 92, 96 | 0d |  |  |
| 94 | Testing & Commissioning Complete | milestone | 0d | 2028-05-30 | 2028-05-30 | 89 | 0d |  |  |
| 95 | Authority Inspection | milestone | 0d | 2028-05-30 | 2028-05-30 | 94, 91 | 0d |  |  |
| 96 | Practical Completion | milestone | 0d | 2028-05-30 | 2028-05-30 | 95 | 0d |  |  |
