# Aurora Tower Helsinki

Schedule from MS Project, 2026-04-21 to 2029-10-15.

## Calendars

- Standard: Mon-Fri 08:00-12:00, 13:00-17:00; Sat-Sun off.

## Schedule

| ID | Task | Type | Duration | Start | Finish | Predecessors | Total slack | Free slack | Work |
| --- | --- | --- | --- | --- | --- | --- | --- | --- | --- |
| 1 | Project Start | milestone | 0d | 2026-04-21 | 2026-04-21 |  | 0d |  |  |
| 2 | Design Start | milestone | 0d | 2026-04-21 | 2026-04-21 | 1 | 0d |  |  |
| 3 | Procurement Start | milestone | 0d | 2026-04-21 | 2026-04-21 | 1 | 400d | 0d |  |
| 4 | MEP (Mechanical, Electrical, Plumbing) Start | milestone | 0d | 2026-04-21 | 2026-04-21 | 1 | 555d | 190d |  |
| 5 | Specifications & Tender Documents Preparation |  | 20d | 2026-04-21 | 2026-05-18 | 3 | 400d | 0d | 160h |
| 6 | Concept Design Development |  | 25d | 2026-04-21 | 2026-05-25 | 2 | 0d |  | 200h |
| 7 | Schematic Design & BREEAM Strategy |  | 20d | 2026-05-05 | 2026-06-01 | 6SS+10d | 0d |  | 160h |
| 8 | Vendor Pre-qualification & Bidding Process |  | 25d | 2026-05-19 | 2026-06-22 | 5 | 400d | 130d | 200h |
| 9 | Concept & Schematic Phase Complete | milestone | 0d | 2026-06-01 | 2026-06-01 | 6, 7 | 0d |  |  |
| 10 | Structural Steel & Precast Hybrid Design |  | 35d | 2026-06-02 | 2026-07-20 | 9 | 0d |  | 280h |
| 11 | MEP Systems & Energy Class A Design |  | 30d | 2026-06-16 | 2026-07-27 | 9, 10SS+10d | 90d |  | 240h |
| 12 | Facade Systems Detailed Design |  | 35d | 2026-11-03 | 2026-12-21 | 10SS+110d, 11SS+10d | 0d |  | 280h |
| 13 | Building Permit Approval | milestone | 0d | 2026-12-21 | 2026-12-21 | 15 | 0d |  |  |
| 14 | Civil & Structural Start | milestone | 0d | 2026-12-21 | 2026-12-21 | 1, 13 | 0d |  |  |
| 15 | Detailed Design Freeze | milestone | 0d | 2026-12-21 | 2026-12-21 | 10, 11, 12 | 0d |  |  |
| 16 | Site Clearance & Mobilization |  | 10d | 2026-12-22 | 2027-01-04 | 14 | 0d |  | 80h |
| 17 | Steel Beam Web Opening Coordination (MEP) |  | 15d | 2026-12-22 | 2027-01-11 | 15 | 365d | 0d | 120h |
| 18 | Vendor Selection & Award (Main Packages) |  | 15d | 2026-12-22 | 2027-01-11 | 8, 15 | 270d | 0d | 120h |
| 19 | Specialist Consultant Interface Coordination |  | 25d | 2026-12-29 | 2027-02-01 | 15, 17SS+5d | 665d | 0d | 200h |
| 20 | District Heating & Water Main Diversions |  | 25d | 2027-01-05 | 2027-02-08 | 16 | 0d |  | 200h |
| 21 | Major Contracts Awarded Milestone | milestone | 0d | 2027-01-11 | 2027-01-11 | 18 | 270d | 0d |  |
| 22 | Procurement & Order: 14.4m Prestressed Spine Beams |  | 10d | 2027-01-12 | 2027-01-25 | 21 | 270d | 0d | 80h |
| 23 | MEP BIM Coordination & Steel Web Opening Finalization |  | 40d | 2027-01-12 | 2027-03-08 | 4, 17 | 365d | 0d | 320h |
| 24 | Procurement & Fabrication: Level 4 Steel Transfer Beam |  | 65d | 2027-01-12 | 2027-04-12 | 21 | 324d | 10d | 520h |
| 25 | MEP Long-Lead Procurement (AHU, Chillers, Heat Exchangers) |  | 65d | 2027-01-12 | 2027-04-12 | 4, 21 | 530d | 120d | 520h |
| 26 | Procurement & Lead Time: MEP Long-Lead Items (AHU/Chillers) |  | 120d | 2027-01-12 | 2027-06-28 | 21 | 475d | 0d | 960h |
| 27 | Bulk Excavation & Rock Preparation |  | 20d | 2027-01-19 | 2027-02-15 | 16, 20SS+10d | 0d |  | 160h |
| 28 | Long-Lead Manufacturing Commenced | milestone | 0d | 2027-01-25 | 2027-01-25 | 22, 24SS, 26SS | 710d |  |  |
| 29 | Manufacturing: Prestressed Spine Beams |  | 90d | 2027-01-26 | 2027-05-31 | 22 | 270d | 20d | 720h |
| 30 | Issue for Construction (IFC) Drawings |  | 40d | 2027-02-02 | 2027-03-29 | 13, 19, 17 | 665d | 0d | 320h |
| 31 | Rock-Socketed RR Piling (8-14m depth) |  | 35d | 2027-02-16 | 2027-04-05 | 27 | 0d |  | 280h |
| 32 | Procurement: South Elevation Rain-Screen & Cladding |  | 45d | 2027-02-23 | 2027-04-26 | 21, 26SS+30d | 645d | 45d | 360h |
| 33 | RC Pile Caps & Ground Beams |  | 20d | 2027-03-02 | 2027-03-29 | 31SS+10d | 0d |  | 160h |
| 34 | Basement Drainage & Under-slab Plumbing |  | 15d | 2027-03-09 | 2027-03-29 | 23, 27 | 365d | 0d | 120h |
| 35 | Design Complete | milestone | 0d | 2027-03-29 | 2027-03-29 | 30 | 665d |  |  |
| 36 | District Heating & Water Main Connection (Helen/HSY) |  | 20d | 2027-03-30 | 2027-04-26 | 34, 20 | 365d | 0d | 160h |
| 37 | Basement RC Walls & Waterproofing |  | 25d | 2027-03-30 | 2027-05-03 | 33 | 0d |  | 200h |
| 38 | Substructure MEP Complete | milestone | 0d | 2027-04-26 | 2027-04-26 | 36 | 365d | 5d |  |
| 39 | Foundations Complete | milestone | 0d | 2027-05-03 | 2027-05-03 | 31, 33, 37 | 0d |  |  |
| 40 | Substructure Ready for Frame | milestone | 0d | 2027-05-03 | 2027-05-03 | 39 | 640d |  |  |
| 41 | Substructure Complete | milestone | 0d | 2027-05-03 | 2027-05-03 | 39, 38 | 640d |  |  |
| 42 | External Civil Works & Drainage |  | 30d | 2027-05-04 | 2027-06-14 | 39 | 610d | 356d | 240h |
| 43 | Jump-form Setup & Core Construction (L0-L13) |  | 110d | 2027-05-04 | 2027-10-04 | 39 | 0d |  | 880h |
| 44 | Ground Floor Slab & Winter Protection |  | 15d | 2027-10-05 | 2027-10-25 | 39, 43SS+110d | 85d | 0d | 120h |
| 45 | MEP Vertical Risers Installation (L1-L13) |  | 85d | 2027-06-01 | 2027-09-27 | 38, 23, 43SS+20d | 340d | 0d | 680h |
| 46 | Architectural & Interior Finishes Start | milestone | 0d | 2027-10-25 | 2027-10-25 | 44 | 130d | 0d |  |
| 47 | Basement Blockwork & Waterproofing Rendering |  | 15d | 2027-10-26 | 2027-11-15 | 46, 37 | 490d | 465d | 120h |
| 48 | Steel/Precast Hybrid Frame (L1-L3) |  | 45d | 2028-02-22 | 2028-04-24 | 44, 43SS+210d, 29SS+10d | 0d |  | 360h |
| 49 | Procurement Complete | milestone | 0d | 2027-06-28 | 2027-06-28 | 29, 24, 26, 32 | 600d |  |  |
| 50 | Lobby Double-Height Steel Column Fire Protection (Intumescent) |  | 10d | 2028-03-07 | 2028-03-20 | 46, 48SS+10d | 355d | 220d | 80h |
| 51 | Fire Sprinkler Main & Branch Installation |  | 70d | 2027-06-29 | 2027-10-04 | 45SS+20d | 430d | 265d | 560h |
| 52 | Level 4 Steel Transfer Beam Installation |  | 12d | 2028-04-25 | 2028-05-10 | 48, 24 | 54d | 0d | 96h |
| 53 | Internal Drywall Partitions - Levels 1-6 |  | 45d | 2028-04-25 | 2028-06-26 | 46, 48 | 0d |  | 360h |
| 54 | Electrical Containment & Cable Tray (L1-L7) |  | 45d | 2028-04-25 | 2028-06-26 | 45SS+10d, 48 | 115d | 0d | 360h |
| 55 | HVAC Ductwork & Pipework Rough-in (L1-L7) |  | 60d | 2028-05-02 | 2028-07-24 | 54SS+5d | 115d | 0d | 480h |
| 56 | Propping & Curing of Transfer Level Slab |  | 14d | 2028-05-11 | 2028-05-30 | 52 | 54d | 0d | 112h |
| 57 | Transfer Level Complete | milestone | 0d | 2028-05-30 | 2028-05-30 | 56 | 359d |  |  |
| 58 | Precast Frame Assembly (L5-L13) |  | 90d | 2028-05-31 | 2028-10-03 | 56, 43SS+60d, 29SS+40d | 54d | 0d | 720h |
| 59 | Main Plant Room Equipment Installation (AHUs/Chillers) |  | 25d | 2027-09-28 | 2027-11-01 | 25, 45, 26 | 410d | 245d | 200h |
| 60 | Electrical Containment & Cable Tray (L8-L13) |  | 40d | 2028-06-28 | 2028-08-22 | 54, 58SS+20d | 129d | 0d | 320h |
| 61 | Internal Drywall Partitions - Levels 7-13 |  | 45d | 2028-09-26 | 2028-11-27 | 53SS+110d, 58SS+30d | 0d |  | 360h |
| 62 | Wet Area Tiling & Sanitaryware Installation |  | 40d | 2028-07-25 | 2028-09-18 | 53, 55 | 270d | 245d | 320h |
| 63 | HVAC Ductwork & Pipework Rough-in (L8-L13) |  | 55d | 2028-07-25 | 2028-10-09 | 55, 60SS+5d | 115d | 0d | 440h |
| 64 | Electrical Switchgear & Panel Boards Installation |  | 30d | 2028-08-23 | 2028-10-03 | 60 | 169d | 4d | 240h |
| 65 | BMS & Controls Wiring and Field Devices |  | 45d | 2028-12-26 | 2029-02-26 | 63SS+110d, 64SS+10d | 115d |  | 360h |
| 66 | Primary Partitioning Complete | milestone | 0d | 2028-11-27 | 2028-11-27 | 53, 61 | 0d |  |  |
| 67 | Internal Door Frames & Ironmongery |  | 25d | 2028-11-28 | 2029-01-01 | 66 | 0d |  | 200h |
| 68 | Internal Painting & Wall Finishes (First Coat) |  | 30d | 2028-12-12 | 2029-01-22 | 66, 67SS+10d | 0d |  | 240h |
| 69 | Superstructure Complete | milestone | 0d | 2028-10-03 | 2028-10-03 | 43, 58 | 254d | 0d |  |
| 70 | Roof Structural Slab & Parapets |  | 15d | 2028-10-04 | 2028-10-24 | 69 | 254d | 0d | 120h |

| ID | Task | Type | Duration | Start | Finish | Predecessors | Total slack | Free slack | Work |
| --- | --- | --- | --- | --- | --- | --- | --- | --- | --- |
| 71 | MEP 1st Fix Complete | milestone | 0d | 2028-10-09 | 2028-10-09 | 63, 51, 59, 64 | 165d | 0d |  |
| 72 | MEP Rough-In Complete | milestone | 0d | 2028-10-09 | 2028-10-09 | 71 | 265d |  |  |
| 73 | Raised Access Flooring - Office Areas |  | 35d | 2028-12-26 | 2029-02-12 | 68SS+10d, 63SS+10d | 135d | 100d | 280h |
| 74 | Suspended Ceiling Grid & Acoustic Panels |  | 50d | 2029-05-15 | 2029-07-23 | 68SS+110d, 63SS+20d | 0d |  | 400h |
| 75 | Civil & Structural Complete | milestone | 0d | 2028-10-24 | 2028-10-24 | 70, 42 | 254d |  |  |
| 76 | Superstructure Complete | milestone | 0d | 2028-10-24 | 2028-10-24 | 69, 70 | 254d |  |  |
| 77 | Envelope Watertight | milestone | 0d | 2028-10-24 | 2028-10-24 | 32, 70 | 254d |  |  |
| 78 | Final MEP Fit-out (Grilles, Lighting, Sanitaryware) |  | 50d | 2029-05-29 | 2029-08-06 | 71, 74SS+10d | 0d |  | 400h |
| 79 | Lobby Feature Joinery & Reception Desk Fit-out |  | 20d | 2029-01-23 | 2029-02-19 | 50, 68 | 135d | 110d | 160h |
| 80 | Level 13 Executive Suite High-End Finishes |  | 25d | 2029-01-23 | 2029-02-26 | 61, 68 | 130d | 105d | 200h |
| 81 | Internal Glazed Partitions & Meeting Rooms |  | 20d | 2029-06-12 | 2029-07-09 | 74SS+20d, 73SS+20d | 35d | 10d | 160h |
| 82 | Major Fit-out Substantially Complete | milestone | 0d | 2029-07-23 | 2029-07-23 | 73, 74, 79, 80, 81 | 25d | 0d |  |
| 83 | Final Floor Finishes (Carpet/Vinyl) & Skirting |  | 30d | 2029-07-24 | 2029-09-03 | 82 | 25d | 0d | 240h |
| 84 | MEP Installation Substantially Complete | milestone | 0d | 2029-08-06 | 2029-08-06 | 78, 65 | 0d |  |  |
| 85 | Electrical Testing, Meggering & Energisation |  | 12d | 2029-08-07 | 2029-08-22 | 84 | 23d |  | 96h |
| 86 | Final Mist Coat & Touch-up Painting |  | 15d | 2029-08-07 | 2029-08-27 | 83SS+10d | 25d | 0d | 120h |
| 87 | System Flushing, Pressure Testing & Chlorination |  | 15d | 2029-08-07 | 2029-08-27 | 84 | 0d |  | 120h |
| 88 | Final Builders Clean & Sparkle Clean |  | 10d | 2029-08-28 | 2029-09-10 | 86, 47, 62 | 25d | 0d | 80h |
| 89 | HVAC Air & Water Balancing |  | 20d | 2029-08-28 | 2029-09-24 | 87 | 0d |  | 160h |
| 90 | Architectural & Interior Finishes Complete | milestone | 0d | 2029-09-10 | 2029-09-10 | 88 | 25d | 0d |  |
| 91 | Interior Fit-Out Complete | milestone | 0d | 2029-09-10 | 2029-09-10 | 90 | 25d |  |  |
| 92 | Integrated Systems Testing (IST) & Fire Alarm Commissioning |  | 15d | 2029-09-25 | 2029-10-15 | 85, 89 | 0d |  | 120h |
| 93 | MEP (Mechanical, Electrical, Plumbing) Complete | milestone | 0d | 2029-10-15 | 2029-10-15 | 92 | 0d |  |  |
| 94 | Project Completion | milestone | 0d | 2029-10-15 | 2029-10-15 | 35, 28, 40, 90, 93, 97 | 0d |  |  |
| 95 | Testing & Commissioning Complete | milestone | 0d | 2029-10-15 | 2029-10-15 | 93 | 0d |  |  |
| 96 | Authority Inspection | milestone | 0d | 2029-10-15 | 2029-10-15 | 95, 91 | 0d |  |  |
| 97 | Practical Completion | milestone | 0d | 2029-10-15 | 2029-10-15 | 96 | 0d |  |  |
