# Aurora Tower Helsinki

Schedule from MS Project, 2026-04-21 to 2028-04-21.

## Calendars

- Standard: Mon-Fri 08:00-12:00, 13:00-17:00; Sat-Sun off.

## Schedule

| ID | Task | Type | Duration | Start | Finish | Predecessors | Total slack | Free slack | Work |
| --- | --- | --- | --- | --- | --- | --- | --- | --- | --- |
| 1 | Project Start | milestone | 0d | 2026-04-21 | 2026-04-21 |  | 0d |  |  |
| 2 | Design Start | milestone | 0d | 2026-04-21 | 2026-04-21 | 1 | 0d |  |  |
| 3 | Procurement Start | milestone | 0d | 2026-04-21 | 2026-04-21 | 1 | 148d | 40d |  |
| 4 | Concept Design Development |  | 25d | 2026-04-21 | 2026-05-25 | 2 | 0d |  | 200h |
| 5 | Schematic Design & BREEAM Strategy |  | 30d | 2026-05-05 | 2026-06-15 | 4SS+10d | 0d |  | 240h |
| 6 | Concept & Schematic Approval | milestone | 0d | 2026-06-15 | 2026-06-15 | 4, 5 | 0d |  |  |
| 7 | Specifications & Tender Documents Preparation |  | 15d | 2026-06-16 | 2026-07-06 | 3, 6SS | 108d | 0d | 120h |
| 8 | Structural Design Development (Steel/Precast Hybrid) |  | 45d | 2026-06-16 | 2026-08-17 | 6 | 0d |  | 360h |
| 9 | Vendor Pre-qualification & Bidding Process |  | 20d | 2026-07-07 | 2026-08-03 | 7 | 108d | 0d | 160h |
| 10 | MEP Systems Design Development |  | 40d | 2026-07-10 | 2026-09-03 | 6, 8SS+18d | 0d |  | 320h |
| 11 | Vendor Selection & Award (General Packages) |  | 25d | 2026-08-04 | 2026-09-07 | 9 | 364d | 0d | 200h |
| 12 | Prestressed Spine Beam (14.4m) - Order & Award |  | 10d | 2026-08-18 | 2026-08-31 | 9, 8 | 98d | 0d | 80h |
| 13 | Facade Carrier Frame & Insulation Package - Award |  | 15d | 2026-08-18 | 2026-09-07 | 11SS+10d | 364d | 0d | 120h |
| 14 | Building Permit (Rakennuslupa) Submission | milestone | 0d | 2026-09-03 | 2026-09-03 | 8, 10 | 0d |  |  |
| 15 | Civil & Structural Start | milestone | 0d | 2026-09-03 | 2026-09-03 | 1, 14 | 0d |  |  |
| 16 | MEP (Mechanical, Electrical, Plumbing) Start | milestone | 0d | 2026-09-03 | 2026-09-03 | 1, 14 | 63d | 0d |  |
| 17 | MEP Long-Lead Equipment (AHUs/Chillers) - RFP & Award |  | 20d | 2026-09-04 | 2026-10-01 | 9, 10 | 198d | 0d | 160h |
| 18 | Site Establishment & Utility Diversions (District Heat/Water) |  | 25d | 2026-09-04 | 2026-10-08 | 15 | 0d |  | 200h |
| 19 | IFC Drawings Production |  | 45d | 2026-09-04 | 2026-11-05 | 14 | 68d | 0d | 360h |
| 20 | MEP Systems Design Development |  | 45d | 2026-09-04 | 2026-11-05 | 16 | 63d | 0d | 360h |
| 21 | Prestressed Spine Beam - Manufacture Lead Time |  | 90d | 2026-09-01 | 2027-01-04 | 12 | 98d | 53d | 720h |
| 22 | All Major Contracts Awarded | milestone | 0d | 2026-09-07 | 2026-09-07 | 11, 13 | 364d | 0d |  |
| 23 | Site Utility Diversions (District Heating/Water) |  | 20d | 2026-09-11 | 2026-10-08 | 16, 18SS+5d | 118d | 45d | 160h |
| 24 | Delivery Tracking & Logistics Management |  | 60d | 2026-09-08 | 2026-11-30 | 22 | 364d | 78d | 480h |
| 25 | Specialist Consultant Interface Coordination |  | 30d | 2026-09-18 | 2026-10-29 | 19SS+10d | 68d | 5d | 240h |
| 26 | Critical Long-Lead Items Ordered | milestone | 0d | 2026-10-01 | 2026-10-01 | 27 | 406d |  |  |
| 27 | Critical Long-Lead Awards Complete | milestone | 0d | 2026-10-01 | 2026-10-01 | 12, 17 | 406d | 0d |  |
| 28 | MEP Long-Lead Equipment Procurement (AHUs/Chillers) |  | 90d | 2026-10-02 | 2027-02-04 | 20SS+10d, 17 | 198d |  | 720h |
| 29 | MEP Long-Lead Equipment - Manufacture & Delivery |  | 120d | 2026-10-02 | 2027-03-18 | 17 | 286d | 0d | 960h |
| 30 | Bulk Excavation & Rock-Socketed RR Piling |  | 45d | 2026-10-09 | 2026-12-10 | 18 | 0d |  | 360h |
| 31 | IFC Package Ready | milestone | 0d | 2026-11-05 | 2026-11-05 | 19, 25 | 95d | 0d |  |
| 32 | Steel Transfer Beam Shop Drawings |  | 20d | 2026-11-06 | 2026-12-03 | 31 | 95d | 0d | 160h |
| 33 | BIM Coordination & MEP Shop Drawings |  | 60d | 2026-11-06 | 2027-01-28 | 20, 25 | 63d | 0d | 480h |
| 34 | Facade Carrier Frame Survey & Shop Drawings |  | 25d | 2026-11-13 | 2026-12-17 | 31, 32SS+5d | 331d | 0d | 200h |
| 35 | RC Pile Caps & Ground Beams Construction |  | 20d | 2026-12-11 | 2027-01-07 | 30 | 0d |  | 160h |
| 36 | Basement Drainage & Underground Services |  | 25d | 2026-12-11 | 2027-01-14 | 23, 30 | 73d | 10d | 200h |
| 37 | Design Complete | milestone | 0d | 2026-12-17 | 2026-12-17 | 32, 34 | 351d |  |  |
| 38 | Basement RC Walls & Waterproofing |  | 25d | 2027-01-08 | 2027-02-11 | 35 | 0d |  | 200h |
| 39 | MEP Substructure & Design Complete | milestone | 0d | 2027-01-28 | 2027-01-28 | 33, 36 | 63d | 50d |  |
| 40 | Foundations Complete | milestone | 0d | 2027-02-11 | 2027-02-11 | 38 | 0d |  |  |
| 41 | Architectural & Interior Finishes Start | milestone | 0d | 2027-02-11 | 2027-02-11 | 1, 40 | 113d | 0d |  |
| 42 | Substructure Complete | milestone | 0d | 2027-02-11 | 2027-02-11 | 40 | 311d |  |  |
| 43 | Basement Blockwork & Internal Partitions |  | 15d | 2027-02-12 | 2027-03-04 | 41, 38 | 113d | 15d | 120h |
| 44 | Core Construction (Jump-form) - Ground to L4 |  | 40d | 2027-02-12 | 2027-04-08 | 40 | 0d |  | 320h |
| 45 | Steel/Precast Frame Assembly - L1 to L3 |  | 35d | 2027-02-26 | 2027-04-15 | 44SS+10d, 21SS+30d | 0d |  | 280h |
| 46 | L0 Lobby & Retail Unit Masonry Walls |  | 20d | 2027-03-12 | 2027-04-08 | 43SS+5d, 44SS+20d | 98d | 15d | 160h |
| 47 | Procurement Complete | milestone | 0d | 2027-03-18 | 2027-03-18 | 21, 29, 24 | 286d |  |  |
| 48 | Riser Installations (HVAC/Plumbing/Fire) |  | 50d | 2027-04-09 | 2027-06-17 | 39, 44 | 13d | 0d | 400h |
| 49 | Level 4 Composite Steel Transfer Beam Installation |  | 15d | 2027-04-16 | 2027-05-06 | 44, 45, 32 | 0d |  | 120h |
| 50 | L1-L3 Drywall Partitions & Acoustic Insulation |  | 25d | 2027-04-16 | 2027-05-20 | 46SS+10d, 45 | 83d | 43d | 200h |
| 51 | MEP First Fix - Levels 1 to 4 (Rough-in) |  | 45d | 2027-04-23 | 2027-06-24 | 48SS+10d, 45 | 13d | 3d | 360h |
| 52 | Transfer Level Complete | milestone | 0d | 2027-05-06 | 2027-05-06 | 49 | 0d |  |  |
| 53 | Core Construction (Jump-form) - L5 to Roof |  | 65d | 2027-05-07 | 2027-08-05 | 52 | 0d |  | 520h |
| 54 | Steel/Precast Frame Assembly - L4 to L8 |  | 50d | 2027-06-02 | 2027-08-10 | 53SS+18d | 0d |  | 400h |
| 55 | L4-L8 Drywall Partitions & Acoustic Insulation |  | 35d | 2027-06-30 | 2027-08-17 | 50SS+10d, 54SS+20d | 40d |  | 280h |
| 56 | MEP First Fix - Levels 5 to 9 (Rough-in) |  | 45d | 2027-06-30 | 2027-08-31 | 51, 54SS+20d | 10d | 5d | 360h |
| 57 | Facade Carrier Frame Installation (South Elevation) |  | 20d | 2027-08-11 | 2027-09-07 | 54, 34 | 163d | 45d | 160h |
| 58 | Steel/Precast Frame Assembly - L9 to L13 |  | 50d | 2027-08-11 | 2027-10-19 | 54, 53SS+40d | 0d |  | 400h |
| 59 | L9-L13 Drywall Partitions & Acoustic Insulation |  | 35d | 2027-09-08 | 2027-10-26 | 55SS+10d, 58SS+20d | 0d |  | 280h |
| 60 | MEP First Fix - Levels 10 to 13 (Rough-in) |  | 40d | 2027-09-08 | 2027-11-02 | 56, 58SS+20d | 5d | 0d | 320h |
| 61 | Internal Wall Plastering & Skimming - All Levels |  | 45d | 2027-10-04 | 2027-12-03 | 50, 55SS+18d, 59SS+18d | 0d |  | 360h |
| 62 | Wet Area Waterproofing & Floor Tiling |  | 30d | 2027-10-18 | 2027-11-26 | 61SS+10d, 51 | 60d | 43d | 240h |
| 63 | Roof Structural Slab & Parapets |  | 15d | 2027-10-20 | 2027-11-09 | 53, 58 | 0d |  | 120h |
| 64 | Drywall Framing Complete | milestone | 0d | 2027-10-26 | 2027-10-26 | 59 | 128d |  |  |
| 65 | Raised Access Flooring Installation (Office Areas) |  | 40d | 2027-11-01 | 2027-12-24 | 61SS+20d, 56SS+20d | 40d | 25d | 320h |
| 66 | MEP First Fix Complete | milestone | 0d | 2027-11-02 | 2027-11-02 | 60, 48 | 5d | 0d |  |
| 67 | MEP Rough-In Complete | milestone | 0d | 2027-11-02 | 2027-11-02 | 66 | 123d |  |  |
| 68 | Superstructure Complete | milestone | 0d | 2027-11-09 | 2027-11-09 | 63 | 118d | 0d |  |
| 69 | Civil & Structural Complete | milestone | 0d | 2027-11-09 | 2027-11-09 | 68, 57 | 118d |  |  |
| 70 | Superstructure Complete Milestone | milestone | 0d | 2027-11-09 | 2027-11-09 | 68 | 118d |  |  |

| ID | Task | Type | Duration | Start | Finish | Predecessors | Total slack | Free slack | Work |
| --- | --- | --- | --- | --- | --- | --- | --- | --- | --- |
| 71 | Plant Room Equipment Installation (Basement/Roof) |  | 35d | 2027-11-10 | 2027-12-28 | 28, 66SS, 63 | 0d |  | 280h |
| 72 | Internal Door Frames & Ironmongery Fit-out |  | 25d | 2027-12-06 | 2028-01-07 | 61 | 50d | 0d | 200h |
| 73 | MEP Second Fix & Terminal Units Installation |  | 65d | 2027-12-06 | 2028-03-03 | 66, 71SS+18d, 61 | 0d |  | 520h |
| 74 | Lobby Feature Joinery & Reception Desk Fit-out |  | 15d | 2027-12-20 | 2028-01-07 | 46, 72SS+10d | 50d | 33d | 120h |
| 75 | Suspended Ceiling Grid & Acoustic Tile Installation |  | 50d | 2027-12-20 | 2028-02-25 | 61, 65SS+10d, 73SS+10d | 15d | 0d | 400h |
| 76 | Internal Painting & Wall Finishes (Mist Coat & Top Coat) |  | 40d | 2028-01-03 | 2028-02-25 | 61, 75SS+10d | 15d | 0d | 320h |
| 77 | BMS & Controls Wiring and Integration |  | 40d | 2028-01-03 | 2028-02-25 | 73SS+20d, 71 | 5d |  | 320h |
| 78 | Sanitaryware Installation & Final Plumbing Trim |  | 20d | 2028-01-27 | 2028-02-23 | 62, 76SS+18d | 17d | 0d | 160h |
| 79 | Fit-out Substantially Complete | milestone | 0d | 2028-02-23 | 2028-02-23 | 72, 74, 78 | 17d | 2d |  |
| 80 | Major Surface Finishes Complete | milestone | 0d | 2028-02-25 | 2028-02-25 | 62, 75 | 40d |  |  |
| 81 | Internal Snagging & Remedial Works |  | 15d | 2028-02-28 | 2028-03-17 | 79, 76 | 15d | 0d | 120h |
| 82 | MEP Installation Phase Complete | milestone | 0d | 2028-03-03 | 2028-03-03 | 73, 77 | 0d |  |  |
| 83 | HVAC Air & Water Balancing |  | 20d | 2028-03-06 | 2028-03-31 | 82 | 0d |  | 160h |
| 84 | Final Builders Clean & Sparkle Clean |  | 10d | 2028-03-20 | 2028-03-31 | 81 | 15d | 0d | 80h |
| 85 | Architectural & Interior Finishes Complete | milestone | 0d | 2028-03-31 | 2028-03-31 | 84 | 15d | 0d |  |
| 86 | Interior Fit-Out Complete | milestone | 0d | 2028-03-31 | 2028-03-31 | 85 | 15d |  |  |
| 87 | MEP Systems Integration Testing |  | 15d | 2028-04-03 | 2028-04-21 | 83 | 0d |  | 120h |
| 88 | MEP (Mechanical, Electrical, Plumbing) Complete | milestone | 0d | 2028-04-21 | 2028-04-21 | 87 | 0d |  |  |
| 89 | Project Completion | milestone | 0d | 2028-04-21 | 2028-04-21 | 37, 47, 69, 64, 88, 91 | 0d |  |  |
| 90 | Testing & Commissioning Complete | milestone | 0d | 2028-04-21 | 2028-04-21 | 88, 84 | 0d |  |  |
| 91 | Authority Inspection | milestone | 0d | 2028-04-21 | 2028-04-21 | 90 | 0d |  |  |
