# Chipsy Plant Detials

Schedule from MS Project, 2011-01-03 to 2011-08-31, status date 2011-02-23, A marks actual dates.
NONE

## Calendars

- Standard: Mon-Thu 08:00-12:00, 13:00-17:00; Fri off; Sat-Sun 08:00-17:00. Exceptions (off unless hours are given): 2011-01-27 to 2011-02-17 (force majeure).

## Schedule

| ID | WBS | Task | Type | Duration | Start | Finish | Predecessors | Complete | Remaining | Total slack | Free slack | Constraint |
| --- | --- | --- | --- | --- | --- | --- | --- | --- | --- | --- | --- | --- |
| 1 | 1 | **مشروع مصنع شيبسى** |  | 194.88d | 2011-01-03 A | 2011-08-31 |  | 4% | 186.51d | 13.62d |  |  |
| 2 | 1.1 | بداية المشروع | milestone | 0d | 2011-01-03 A | 2011-01-03 A |  | 100% |  |  |  |  |
| 3 | 1.2 | **تجهيزات الموقع** |  | 15d | 2011-01-03 A | 2011-01-19 A |  | 100% |  |  |  |  |
| 4 | 1.2.1 | إستلام الموقغ | milestone | 0d | 2011-01-03 A | 2011-01-03 A | 2 | 100% |  |  |  | must start on 2011-01-03 |
| 5 | 1.2.2 | التجهيزات |  | 15d | 2011-01-03 A | 2011-01-19 A | 4SS | 100% |  |  |  |  |
| 6 | 1.2.3 | إستلام الرسومات التنفيذية | milestone | 0d | 2011-01-03 A | 2011-01-03 A | 2 | 100% |  |  |  |  |
| 7 | 1.2.4 | إستلام الدفعة المقدمة | milestone | 0d | 2011-01-10 A | 2011-01-10 A | 2FS+7d | 100% |  |  |  |  |
| 8 | 1.3 | **مبنى مخازن المنتج التام** |  | 126.5d | 2011-01-03 A | 2011-06-15 |  | 19% | 102.59d | 82d |  |  |
| 9 | 1.3.1 | **أعمال الرسومات** |  | 15d | 2011-01-03 A | 2011-01-19 A |  | 100% |  |  |  |  |
| 10 | 1.3.1.1 | تقديم الرسومات التشغيلية للأعمال الإنشائية |  | 5d | 2011-01-03 A | 2011-01-08 A | 6 | 100% |  |  |  |  |
| 11 | 1.3.1.2 | تقديم الرسومات التشغيلية للأعمال المعدنية |  | 10d | 2011-01-03 A | 2011-01-13 A | 6 | 100% |  |  |  |  |
| 12 | 1.3.1.3 | إعتماد الرسومات التشغيلية للأعمال الإنشائية |  | 3d | 2011-01-08 A | 2011-01-11 A | 10 | 100% |  |  |  |  |
| 13 | 1.3.1.4 | إعتماد الرسومات التشغيلية للأعمال المعدنية |  | 5d | 2011-01-13 A | 2011-01-19 A | 11 | 100% |  |  |  |  |
| 14 | 1.3.2 | **أعمال الحفر و الأساسات** |  | 25d | 2011-01-03 A | 2011-02-21 |  | 85% | 3.63d | 169.88d |  |  |
| 15 | 1.3.2.1 | أعمال الحفر |  | 4d | 2011-01-03 A | 2011-01-06 A | 6 | 100% |  |  |  |  |
| 16 | 1.3.2.2 | الدمك على منسوب التأسيس |  | 2.12d | 2011-01-06 A | 2011-01-08 A | 15 | 100% |  |  |  |  |
| 17 | 1.3.2.3 | أعمال الخرسانة العادية للقواعد |  | 12d | 2011-01-08 A | 2011-01-27 A | 16 | 100% |  |  |  |  |
| 18 | 1.3.2.4 | أعمال الخرسانة المسلحة للقواعد |  | 11.5d | 2011-01-18 A | 2011-02-21 A | 17SS+7d | 100% |  |  |  |  |
| 19 | 1.3.2.5 | أعمال عزل القواعد |  | 5d | 2011-01-25 A | 2011-02-21 | 18SS+6d | 40% | 3d | 170.12d | 0d |  |
| 20 | 1.3.2.6 | أعمال الردم و الدمك حتى منسوب القواعد |  | 3.55d | 2011-01-26 A | 2011-02-21 | 19SS+1d | 28% | 2.55d | 170.57d |  |  |
| 21 | 1.3.3 | **أعمال الهيكل الإنشائى** |  | 16.75d | 2011-02-08 A | 2011-03-08 |  | 93% | 1.16d | 156.38d |  |  |
| 22 | 1.3.3.1 | **أعمال رقاب الأعمدة و السملات** |  | 16.75d | 2011-02-08 A | 2011-03-08 |  | 93% | 1.16d | 156.38d |  |  |
| 23 | 1.3.3.1.1 | **المرحلة الأولى** |  | 8.4d | 2011-02-08 A | 2011-02-27 |  | 89% | 0.91d | 164.72d |  |  |
| 24 | 1.3.3.1.1.1 | أعمال النجارة و الحدادة والصب حتى منسوب السملات |  | 6.53d | 2011-02-08 A | 2011-02-26 A | 20SS+3d, 12, 5 | 100% |  |  |  |  |
| 25 | 1.3.3.1.1.2 | أعمال العزل حتى منسوب السملات |  | 19.75d | 2011-02-11 A | 2011-02-27 | 24SS+7d | 93% | 1.4d | 164.72d | 0d |  |
| 26 | 1.3.3.1.1.3 | أعمال الردم حتى منسوب السملات |  | 5d | 2011-02-19 A | 2011-02-23 | 25SS+2d | 60% | 2d | 168.12d |  |  |

| ID | WBS | Task | Duration | Start | Finish | Predecessors | Complete | Total slack | Free slack |
| --- | --- | --- | --- | --- | --- | --- | --- | --- | --- |
| 27 | 1.3.3.1.2 | **المرحلة الثانية** | 15.62d | 2011-02-20 A | 2011-03-08 A |  | 100% |  |  |
| 28 | 1.3.3.1.2.1 | أعمال تركيب الجوايت | 10.38d | 2011-02-20 A | 2011-03-02 A | 26 | 100% |  |  |
| 29 | 1.3.3.1.2.2 | أعمال صب رقاب الأعمندة بعد منسوب السملات | 4.12d | 2011-03-01 A | 2011-03-05 A | 28SS+5d | 100% |  |  |
| 30 | 1.3.3.1.2.3 | أعمال العزل و الردم | 3.12d | 2011-03-06 A | 2011-03-08 A | 29SS+2d | 100% |  |  |
| 31 | 1.3.4 | **أعمال جمالون الحديد** | 23d | 2011-03-09 | 2011-04-03 |  |  | 1d |  |
| 32 | 1.3.4.1 | أعمال توريد وتركيب الأعمدة و الكمرات و المدادات | 18d | 2011-03-09 | 2011-03-29 | 13, 30 |  | 1d | 0d |
| 33 | 1.3.4.2 | أعمال توريد و تركيب طبقة الصاج الداخلية للأسقف | 14d | 2011-03-14 | 2011-03-30 | 32SS+5d |  | 96.38d | 0d |
| 34 | 1.3.4.3 | أعمال عزل الصوف الصخرى | 15d | 2011-03-17 | 2011-04-03 | 33SS+3d |  | 133.38d | 0d |
| 35 | 1.3.4.4 | أعمال توريد و تركيب طبقة الصاج الخارجية للأسقف | 11d | 2011-03-21 | 2011-04-03 | 34SS+3d |  | 148d |  |
| 36 | 1.3.5 | **أعمال المبانى وتركيب صاج الحوائط** | 20d | 2011-04-24 | 2011-05-16 |  |  | 1d |  |
| 37 | 1.3.5.1 | أعمال المبانى | 10d | 2011-04-24 | 2011-05-04 | 56 |  | 1d | 0d |
| 38 | 1.3.5.2 | تركيب صاج الحوائط | 13d | 2011-04-28 | 2011-05-12 | 37SS+4d |  | 1d | 0d |
| 39 | 1.3.5.3 | تركيب ألواح ساندوتش | 13d | 2011-05-02 | 2011-05-16 | 38SS+3d |  | 1d | 0d |
| 40 | 1.3.6 | **أعمال الإلكترو ميكانيك** | 81d | 2011-03-16 | 2011-06-15 |  |  | 55d |  |
| 41 | 1.3.6.1 | **أعمال الميكانيكا** | 80d | 2011-03-16 | 2011-06-14 |  |  | 69.38d |  |
| 42 | 1.3.6.1.1 | HVAC system | 53d | 2011-03-16 | 2011-05-15 | 33SS+2d |  | 96.38d | 0d |
| 43 | 1.3.6.1.2 | Fire Fihgting | 36d | 2011-05-05 | 2011-06-14 | 37 |  | 69.38d | 3d |
| 44 | 1.3.6.2 | **أعمال الكهرباء** | 35d | 2011-05-07 | 2011-06-15 |  |  | 9d |  |
| 45 | 1.3.6.2.1 | الإنارة | 20d | 2011-05-07 | 2011-05-29 | 39SS+5d |  | 80.38d | 0d |
| 46 | 1.3.6.2.2 | الكشافات | 20d | 2011-05-10 | 2011-06-01 | 45SS+3d |  | 80.38d | 20d |
| 47 | 1.3.6.2.3 | أعمال مكافحة الحريق | 26d | 2011-05-16 | 2011-06-14 | 39 |  | 1d | 9d |
| 48 | 1.3.6.2.4 | اللوحات | 15d | 2011-05-16 | 2011-06-01 | 39 |  | 12d | 20d |
| 49 | 1.3.6.2.5 | القوى | 27d | 2011-05-16 | 2011-06-15 | 39 |  | 68.38d | 0d |
| 50 | 1.3.6.2.6 | التليفونات | 14d | 2011-05-31 | 2011-06-15 | 39FS+13d |  | 68.38d | 0d |
| 51 | 1.3.6.2.7 | سحب الكابلات | 15d | 2011-05-28 | 2011-06-13 | 49SS+10d |  | 70.38d | 0d |
| 52 | 1.3.6.2.8 | البرايز | 10d | 2011-06-01 | 2011-06-12 | 51SS+4d |  | 71.38d | 4d |

| ID | WBS | Task | Type | Duration | Start | Finish | Predecessors | Complete | Remaining | Total slack | Free slack |
| --- | --- | --- | --- | --- | --- | --- | --- | --- | --- | --- | --- |
| 53 | 1.3.7 | **أعمال الأرضيات** |  | 69d | 2011-03-29 | 2011-06-14 |  |  |  | 1d |  |
| 54 | 1.3.7.1 | أعمال صب دكة عادية 10 سم |  | 7d | 2011-03-29 | 2011-04-05 | 32, 30 |  |  | 1d | 0d |
| 55 | 1.3.7.2 | أعمال صب دكة عادية 15 سم |  | 6d | 2011-04-06 | 2011-04-12 | 54 |  |  | 1d | 0d |
| 56 | 1.3.7.3 | أعمال صب دكة خرسانة مسلحة 20 سم |  | 10d | 2011-04-12 | 2011-04-24 | 55 |  |  | 1d | 0d |
| 57 | 1.3.7.4 | أعمال اليوكريت |  | 20d | 2011-05-23 | 2011-06-14 | 65SS+3d |  |  | 69.38d | 8d |
| 58 | 1.3.8 | **أعمال البياض** |  | 10d | 2011-05-16 | 2011-05-28 |  |  |  | 19d |  |
| 59 | 1.3.8.1 | أعمال البياض الداخلى |  | 7d | 2011-05-16 | 2011-05-24 | 39 |  |  | 69.38d | 0d |
| 60 | 1.3.8.2 | أعمال البياض الخارجى |  | 7d | 2011-05-16 | 2011-05-24 | 39 |  |  | 19d | 0d |
| 61 | 1.3.8.3 | أعمال بياض فطيسة ناعمة |  | 5d | 2011-05-19 | 2011-05-25 | 60SS+3d |  |  | 19d | 27d |
| 62 | 1.3.8.4 | أعمال بياض فطيسة خشنة |  | 5d | 2011-05-19 | 2011-05-25 | 60SS+3d |  |  | 19d | 27d |
| 63 | 1.3.8.5 | أعمال تركيب الوزر |  | 7d | 2011-05-19 | 2011-05-28 | 59SS+3d |  |  | 69.38d | 0d |
| 64 | 1.3.9 | **أعمال الدهانات** |  | 12d | 2011-05-19 | 2011-06-01 |  |  |  | 69.38d |  |
| 65 | 1.3.9.1 | أعمال الدهان الداخلى |  | 12d | 2011-05-19 | 2011-06-01 | 63SS |  |  | 69.38d | 0d |
| 66 | 1.3.10 | **أعمال تركيب الأبواب** |  | 9d | 2011-05-19 | 2011-05-29 |  |  |  | 83.38d |  |
| 67 | 1.3.10.1 | أعمال تركيب الأبواب |  | 9d | 2011-05-19 | 2011-05-29 | 65SS |  |  | 83.38d | 23d |
| 68 | 1.3.11 | **تسليم المبنى** |  | 0d | 2011-06-15 | 2011-06-15 |  |  |  | 68.38d |  |
| 69 | 1.3.11.1 | تسليم المبنى | milestone | 0d | 2011-06-15 | 2011-06-15 | 67, 57, 61, 62, 42, 43, 45, 47, 46, 48, 49, 50, 52 |  |  | 68.38d |  |
| 70 | 1.4 | **أعمال تطوير مبنى التصنيع و التغليف و منطقة الخدمات** |  | 140.5d | 2011-01-06 A | 2011-07-04 |  | 2% | 137.94d | 51.38d |  |
| 71 | 1.4.1 | **مبنى التصنيع و التغليف** |  | 136.62d | 2011-01-06 A | 2011-06-30 |  | 2% | 133.31d | 55.25d |  |
| 72 | 1.4.1.1 | **المرحلة الأولى** |  | 136.62d | 2011-01-06 A | 2011-06-30 |  | 4% | 131.29d | 55.25d |  |
| 73 | 1.4.1.1.1 | **أعمال فك الإلكترو ميكانيك** |  | 4.25d | 2011-01-06 A | 2011-01-10 A |  | 100% |  |  |  |
| 74 | 1.4.1.1.1.1 | فك أعمال الإلكتروميكانيك |  | 4.25d | 2011-01-06 A | 2011-01-10 A | 4FS+3d | 100% |  |  |  |
| 75 | 1.4.1.1.2 | **أعمال جمالون الحديد** |  | 77d | 2011-01-06 A | 2011-04-24 |  | 20% | 61.5d | 114.88d |  |
| 76 | 1.4.1.1.2.1 | فك جمالون الحديد |  | 24.15d | 2011-01-06 A | 2011-02-24 | 74 | 78% | 5.4d | 167.72d | 0d |
| 77 | 1.4.1.1.2.2 | أعمال تدعيم جمالون الحديد و دهانه |  | 29d | 2011-02-20 | 2011-03-23 | 76SS+20d |  |  | 22.88d | 0d |
| 78 | 1.4.1.1.2.3 | أعمال تركيب جمالون الحديد |  | 15d | 2011-03-26 | 2011-04-12 | 77FS+2d |  |  | 22.88d | 0d |
| 79 | 1.4.1.1.2.4 | أعمال الصاج الداخلي |  | 7d | 2011-03-31 | 2011-04-09 | 78SS+5d |  |  | 29.88d | 0d |
| 80 | 1.4.1.1.2.5 | أعمال الصاج الخارجي |  | 4d | 2011-03-31 | 2011-04-05 | 78SS+5d |  |  | 35.88d | 0d |
| 81 | 1.4.1.1.2.6 | أعمال العزل |  | 14d | 2011-04-09 | 2011-04-24 | 78SS+6d, 79, 80 |  |  | 32.88d | 0d |

| ID | WBS | Task | Duration | Start | Finish | Predecessors | Complete | Remaining | Total slack | Free slack |
| --- | --- | --- | --- | --- | --- | --- | --- | --- | --- | --- |
| 82 | 1.4.1.1.3 | **أعمال الأرضيات** | 73d | 2011-01-23 A | 2011-05-07 |  | 2% | 71.53d | 104.25d |  |
| 83 | 1.4.1.1.3.1 | أعمال إزالة الأرضيات | 24d | 2011-01-23 A | 2011-03-12 | 76SS+16d | 8% | 22d | 153.25d | 0d |
| 84 | 1.4.1.1.3.2 | أعمال الصرف | 25d | 2011-02-26 | 2011-03-26 | 83SS+11d |  |  | 2.25d | 0d |
| 85 | 1.4.1.1.3.3 | إعادة صب دكة خرسانة مسلحة بعد إنتهاء أعمال الصرف | 21d | 2011-03-12 | 2011-04-04 | 84SS+12d |  |  | 2.25d | 0d |
| 86 | 1.4.1.1.3.4 | أعمال اليوكريت | 29d | 2011-04-04 | 2011-05-07 | 85 |  |  | 2.25d | 0d |
| 87 | 1.4.1.1.4 | **أعمال الإلكترو ميكانيك** | 76.62d | 2011-04-05 | 2011-06-30 |  |  |  | 2.25d |  |
| 88 | 1.4.1.1.4.1 | **اعمال الكهرباء** | 56d | 2011-04-05 | 2011-06-07 |  |  |  | 22.88d |  |
| 89 | 1.4.1.1.4.1.1 | الإنارة | 40d | 2011-04-05 | 2011-05-19 | 80 |  |  | 38.88d | 0d |
| 90 | 1.4.1.1.4.1.2 | القوى | 28d | 2011-04-09 | 2011-05-10 | 89SS+3d |  |  | 47.88d | 45.62d |
| 91 | 1.4.1.1.4.1.3 | تليفونات | 25d | 2011-04-13 | 2011-05-11 | 89SS+7d |  |  | 46.88d | 44.62d |
| 92 | 1.4.1.1.4.1.4 | الحريق | 30d | 2011-04-23 | 2011-05-26 | 103 |  |  | 32.88d | 30.63d |
| 93 | 1.4.1.1.4.1.5 | كاميرات المراقبة | 26d | 2011-05-09 | 2011-06-07 | 105 |  |  | 22.88d | 20.62d |
| 94 | 1.4.1.1.4.2 | **اعمال الميكانيكا** | 73.62d | 2011-04-09 | 2011-06-30 |  |  |  | 2.25d |  |
| 95 | 1.4.1.1.4.2.1 | HVAC system | 46d | 2011-04-09 | 2011-05-30 | 79 |  |  | 29.88d | 27.62d |
| 96 | 1.4.1.1.4.2.2 | hot water | 30d | 2011-04-23 | 2011-05-26 | 103 |  |  | 32.88d | 30.63d |
| 97 | 1.4.1.1.4.2.3 | raw water | 30d | 2011-04-23 | 2011-05-26 | 103 |  |  | 32.88d | 30.63d |
| 98 | 1.4.1.1.4.2.4 | VEGETABLE OIL | 30d | 2011-04-23 | 2011-05-26 | 103 |  |  | 32.88d | 30.63d |
| 99 | 1.4.1.1.4.2.5 | Fire Fighting | 29d | 2011-04-23 | 2011-05-25 | 103 |  |  | 33.88d | 31.63d |
| 100 | 1.4.1.1.4.2.6 | cold water | 30d | 2011-04-23 | 2011-05-26 | 103 |  |  | 32.88d | 30.63d |
| 101 | 1.4.1.1.4.2.7 | comressed air | 49d | 2011-05-07 | 2011-06-30 | 86 |  |  | 2.25d | 0d |
| 102 | 1.4.1.1.5 | **أعمال المبانى** | 57.25d | 2011-02-12 A | 2011-04-23 |  | 26% | 42.2d | 32.88d |  |
| 103 | 1.4.1.1.5.1 | أعمال المبانى | 9.5d | 2011-02-12 A | 2011-04-23 | 81FS-8d, 85FS-8d | 26% | 7d | 32.88d | 0d |
| 104 | 1.4.1.1.6 | **أعمال البياض** | 25d | 2011-04-12 | 2011-05-10 |  |  |  | 22.88d |  |
| 105 | 1.4.1.1.6.1 | أعمال البياض الداخلى | 24d | 2011-04-12 | 2011-05-09 | 103SS+3d, 78 |  |  | 22.88d | 0d |
| 106 | 1.4.1.1.6.2 | أعمال البياض الخارجى | 24d | 2011-04-12 | 2011-05-09 | 103SS+3d, 78 |  |  | 35.88d | 0d |
| 107 | 1.4.1.1.6.3 | أعمال تركيب الوزر | 15d | 2011-04-23 | 2011-05-10 | 105SS+10d |  |  | 35.88d | 0d |
| 108 | 1.4.1.1.6.4 | أعمال بياض فطيسة للواجهات | 15d | 2011-04-23 | 2011-05-10 | 106SS+10d |  |  | 35.88d | 0d |

| ID | WBS | Task | Type | Duration | Start | Finish | Predecessors | Total slack | Free slack |
| --- | --- | --- | --- | --- | --- | --- | --- | --- | --- |
| 109 | 1.4.1.1.7 | **أعمال الدهانات** |  | 15d | 2011-05-04 | 2011-05-21 |  | 35.88d |  |
| 110 | 1.4.1.1.7.1 | أعمال الدهانات |  | 15d | 2011-05-04 | 2011-05-21 | 107FS-5d, 108FS-5d | 35.88d | 0d |
| 111 | 1.4.1.1.8 | **أعمال تركيب الأبواب** |  | 12d | 2011-05-10 | 2011-05-23 |  | 35.88d |  |
| 112 | 1.4.1.1.8.1 | أعمال تركيب الأبواب |  | 12d | 2011-05-10 | 2011-05-23 | 110SS+5d | 35.88d | 33.62d |
| 113 | 1.4.1.1.9 | **تسليم المرحلة الأولى** |  | 0d | 2011-06-30 | 2011-06-30 |  | 2.25d |  |
| 114 | 1.4.1.1.9.1 | تسليم المرحلة الأولى | milestone | 0d | 2011-06-30 | 2011-06-30 | 112, 86, 95, 99, 100, 101, 96, 97, 98, 89, 90, 92, 93, 91 | 2.25d |  |
| 115 | 1.4.1.2 | **المرحلة الثانية** |  | 77d | 2011-03-22 | 2011-06-15 |  | 67.88d |  |
| 116 | 1.4.1.2.1 | **أعمال فك الإلكترو ميكانيك** |  | 6d | 2011-03-22 | 2011-03-28 |  | 67.88d |  |
| 117 | 1.4.1.2.1.1 | فك أعمال الإلكتروميكانيك |  | 6d | 2011-03-22 | 2011-03-28 | 2FS+50d | 67.88d | 0d |
| 118 | 1.4.1.2.2 | **أعمال جمالون الحديد** |  | 38d | 2011-03-28 | 2011-05-10 |  | 67.88d |  |
| 119 | 1.4.1.2.2.1 | فك جمالون الحديد |  | 12d | 2011-03-28 | 2011-04-11 | 117 | 67.88d | 0d |
| 120 | 1.4.1.2.2.2 | أعمال تدعيم جمالون الحديد و دهانه |  | 12d | 2011-03-29 | 2011-04-12 | 119SS+1d | 67.88d | 0d |
| 121 | 1.4.1.2.2.3 | تركيب الجمالون |  | 6d | 2011-04-12 | 2011-04-18 | 120 | 67.88d | 0d |
| 122 | 1.4.1.2.2.4 | الصاج الداخلي |  | 5d | 2011-04-17 | 2011-04-21 | 121FS-2d | 67.88d | 0d |
| 123 | 1.4.1.2.2.5 | العزل |  | 5d | 2011-04-20 | 2011-04-25 | 122FS-2d | 67.88d | 0d |
| 124 | 1.4.1.2.2.6 | الصاج الخارجي |  | 5d | 2011-04-25 | 2011-05-01 | 123 | 67.88d | 0d |
| 125 | 1.4.1.2.2.7 | أعمال العزل |  | 10d | 2011-04-28 | 2011-05-10 | 124FS-2d | 67.88d | 0d |
| 126 | 1.4.1.2.3 | **أعمال الأرضيات** |  | 33d | 2011-04-05 | 2011-05-12 |  | 73.88d |  |
| 127 | 1.4.1.2.3.1 | أعمال إزالة الأرضيات |  | 10d | 2011-04-05 | 2011-04-17 | 119SS+7d | 73.88d | 0d |
| 128 | 1.4.1.2.3.2 | أعمال الصرف |  | 15d | 2011-04-09 | 2011-04-25 | 127SS+3d | 73.88d | 0d |
| 129 | 1.4.1.2.3.3 | إعادة صب دكة خرسانة مسلحة بعد إنتهاء أعمال الصرف |  | 10d | 2011-04-23 | 2011-05-03 | 128SS+12d | 73.88d | 0d |
| 130 | 1.4.1.2.3.4 | أعمال اليوكريت |  | 8d | 2011-05-03 | 2011-05-12 | 129 | 98.88d | 31d |
| 131 | 1.4.1.2.4 | **أعمال الإلكترو ميكانيك** |  | 49d | 2011-04-23 | 2011-06-15 |  | 67.88d |  |
| 132 | 1.4.1.2.4.1 | **أعمال الميكانيكا** |  | 49d | 2011-04-23 | 2011-06-15 |  | 67.88d |  |
| 133 | 1.4.1.2.4.1.1 | HVAC system |  | 40d | 2011-04-23 | 2011-06-06 | 122 | 76.88d | 9d |
| 134 | 1.4.1.2.4.1.2 | Fire Fighting |  | 33d | 2011-05-10 | 2011-06-15 | 143 | 67.88d | 0d |
| 135 | 1.4.1.2.4.1.3 | cold water |  | 33d | 2011-05-10 | 2011-06-15 | 143 | 67.88d | 0d |

| ID | WBS | Task | Type | Duration | Start | Finish | Predecessors | Total slack | Free slack | Constraint |
| --- | --- | --- | --- | --- | --- | --- | --- | --- | --- | --- |
| 136 | 1.4.1.2.4.2 | **أعمال الكهرباء** |  | 41d | 2011-05-01 | 2011-06-15 |  | 67.88d |  |  |
| 137 | 1.4.1.2.4.2.1 | الإنارة |  | 41d | 2011-05-01 | 2011-06-15 | 124 | 67.88d | 0d |  |
| 138 | 1.4.1.2.4.2.2 | تليفونات |  | 23d | 2011-05-05 | 2011-05-31 | 137SS+4d | 81.88d | 14d |  |
| 139 | 1.4.1.2.4.2.3 | القوى |  | 30d | 2011-05-07 | 2011-06-09 | 137SS+5d | 73.88d | 6d |  |
| 140 | 1.4.1.2.4.2.4 | الحريق |  | 20d | 2011-05-24 | 2011-06-15 | 145 | 67.88d | 0d |  |
| 141 | 1.4.1.2.4.2.5 | كاميرات المراقبة |  | 13d | 2011-05-31 | 2011-06-14 | 150 | 68.88d | 1d |  |
| 142 | 1.4.1.2.5 | **أعمال المبانى** |  | 10d | 2011-04-28 | 2011-05-10 |  | 67.88d |  |  |
| 143 | 1.4.1.2.5.1 | أعمال المبانى |  | 10d | 2011-04-28 | 2011-05-10 | 125FS-10d, 129FS-10d | 67.88d | 0d |  |
| 144 | 1.4.1.2.6 | **أعمال البياض** |  | 22d | 2011-05-02 | 2011-05-26 |  | 67.88d |  |  |
| 145 | 1.4.1.2.6.1 | أعمال البياض الداخلى |  | 20d | 2011-05-02 | 2011-05-24 | 143SS+3d, 121 | 67.88d | 0d |  |
| 146 | 1.4.1.2.6.2 | أعمال البياض الخارجى |  | 20d | 2011-05-02 | 2011-05-24 | 143SS+3d, 121 | 68.88d | 0d |  |
| 147 | 1.4.1.2.6.3 | أعمال تركيب الوزر |  | 15d | 2011-05-10 | 2011-05-26 | 145SS+7d | 68.88d | 0d |  |
| 148 | 1.4.1.2.6.4 | أعمال بياض فطيسة للواجهات |  | 15d | 2011-05-10 | 2011-05-26 | 146SS+7d | 68.88d | 0d |  |
| 149 | 1.4.1.2.7 | **أعمال الدهانات** |  | 7d | 2011-05-23 | 2011-05-31 |  | 68.88d |  |  |
| 150 | 1.4.1.2.7.1 | أعمال الدهانات |  | 7d | 2011-05-23 | 2011-05-31 | 147FS-3d, 148FS-3d | 68.88d | 0d |  |
| 151 | 1.4.1.2.8 | **أعمال تركيب الأبواب** |  | 7d | 2011-05-29 | 2011-06-06 |  | 76.88d |  |  |
| 152 | 1.4.1.2.8.1 | أعمال تركيب الأبواب |  | 7d | 2011-05-29 | 2011-06-06 | 150SS+5d | 76.88d | 9d |  |
| 153 | 1.4.1.2.9 | **تسليم المرحلة الثانية** |  | 0d | 2011-06-15 | 2011-06-15 |  | 67.88d |  |  |
| 154 | 1.4.1.2.9.1 | تسليم المرحلة الثانية | milestone | 0d | 2011-06-15 | 2011-06-15 | 130, 152, 133, 134, 135, 137, 139, 141, 140, 138 | 67.88d |  |  |
| 155 | 1.4.2 | **مبنى الخدمات** |  | 79d | 2011-04-07 | 2011-07-04 |  | 51.38d |  |  |
| 156 | 1.4.2.1 | **أعمال فك السلم القائم و السقف القائم** |  | 10d | 2011-04-07 | 2011-04-18 | 2 | 51.38d |  |  |
| 157 | 1.4.2.1.1 | فك السلم القائم |  | 5d | 2011-04-07 | 2011-04-12 | 2 | 51.38d | 0d | start no earlier than 2011-04-07 |
| 158 | 1.4.2.1.2 | فك السقف القائم |  | 5d | 2011-04-12 | 2011-04-18 | 157 | 51.38d | 0d |  |
| 159 | 1.4.2.2 | **أعمال هدم غرفة الكوفر** |  | 1d | 2011-04-12 | 2011-04-13 |  | 124.38d |  |  |
| 160 | 1.4.2.2.1 | أعمال الهدم |  | 1d | 2011-04-12 | 2011-04-13 | 157 | 124.38d | 73d |  |

| ID | WBS | Task | Duration | Start | Finish | Predecessors | Total slack | Free slack |
| --- | --- | --- | --- | --- | --- | --- | --- | --- |
| 161 | 1.4.2.3 | **أعمال المبانى** | 10d | 2011-04-18 | 2011-04-30 |  | 51.38d |  |
| 162 | 1.4.2.3.1 | أعمال المبانى | 10d | 2011-04-18 | 2011-04-30 | 158 | 51.38d | 0d |
| 163 | 1.4.2.4 | **أعمال البياض** | 30d | 2011-04-21 | 2011-05-25 |  | 51.38d |  |
| 164 | 1.4.2.4.1 | أعمال البياض الداخلى | 27d | 2011-04-21 | 2011-05-22 | 162SS+3d | 54.38d | 0d |
| 165 | 1.4.2.4.2 | أعمال البياض الخارجى | 27d | 2011-04-21 | 2011-05-22 | 162SS+3d | 51.38d | 0d |
| 166 | 1.4.2.4.3 | أعمال بياض فطيسة ناعمة للواجهات | 20d | 2011-05-03 | 2011-05-25 | 165SS+10d | 51.38d | 0d |
| 167 | 1.4.2.4.4 | أعمال بياض فطيسة خشنة للواجهات | 20d | 2011-05-03 | 2011-05-25 | 165SS+10d | 51.38d | 0d |
| 168 | 1.4.2.5 | **اعمال الالكتروميكانيك** | 59d | 2011-04-30 | 2011-07-04 |  | 51.38d |  |
| 169 | 1.4.2.5.1 | **اعمال الكهرباء** | 38d | 2011-04-30 | 2011-06-11 |  | 72.38d |  |
| 170 | 1.4.2.5.1.1 | محطة الكهرباءو الخدمات | 38d | 2011-04-30 | 2011-06-11 | 162 | 86d | 21d |
| 171 | 1.4.2.5.2 | **اعمال الميكانيكا** | 56d | 2011-05-03 | 2011-07-04 |  | 51.38d |  |
| 172 | 1.4.2.5.2.1 | supports installation | 10d | 2011-05-03 | 2011-05-14 | 164SS+10d | 97.38d | 46d |
| 173 | 1.4.2.5.2.2 | CHILLER ROOM | 14d | 2011-06-12 | 2011-06-27 | 184 | 71d | 6d |
| 174 | 1.4.2.5.2.3 | COMPRESSOR ROOM | 15d | 2011-06-12 | 2011-06-28 | 184 | 70d | 5d |
| 175 | 1.4.2.5.2.4 | VEGETABLE OIL PUMP | 10d | 2011-06-12 | 2011-06-23 | 184 | 75d | 10d |
| 176 | 1.4.2.5.2.5 | water softener | 10d | 2011-06-12 | 2011-06-23 | 184 | 75d | 10d |
| 177 | 1.4.2.5.2.6 | hot water pumps | 10d | 2011-06-12 | 2011-06-23 | 184 | 75d | 10d |
| 178 | 1.4.2.5.2.7 | FIRE PUMPS | 10d | 2011-06-12 | 2011-06-23 | 184 | 75d | 10d |
| 179 | 1.4.2.5.2.8 | BOOSTER PUMP | 10d | 2011-06-12 | 2011-06-23 | 184 | 75d | 10d |
| 180 | 1.4.2.5.2.9 | sewage and sumpersible pumps | 10d | 2011-06-12 | 2011-06-23 | 184 | 75d | 10d |
| 181 | 1.4.2.5.2.10 | CIP PUMP | 10d | 2011-06-23 | 2011-07-04 | 184FS+10d | 51.38d | 0d |
| 182 | 1.4.2.6 | **أعمال التكسية** | 16d | 2011-05-25 | 2011-06-12 |  | 51.38d |  |
| 183 | 1.4.2.6.1 | أعمال تكسية الحوائط | 8d | 2011-05-25 | 2011-06-02 | 166, 164, 167 | 51.38d | 0d |
| 184 | 1.4.2.6.2 | أعمال تكسية الأرضيات | 8d | 2011-06-04 | 2011-06-12 | 183 | 51.38d | 0d |

| ID | WBS | Task | Type | Duration | Start | Finish | Predecessors | Total slack | Free slack | Constraint |
| --- | --- | --- | --- | --- | --- | --- | --- | --- | --- | --- |
| 185 | 1.4.2.7 | **أعمال تركيب السلم القائم و السقف القائم** |  | 14d | 2011-06-12 | 2011-06-27 |  | 51.38d |  |  |
| 186 | 1.4.2.7.1 | تركيب السلم القائم |  | 7d | 2011-06-12 | 2011-06-20 | 184 | 51.38d | 0d |  |
| 187 | 1.4.2.7.2 | **تركيب السقف القائم** |  | 7d | 2011-06-20 | 2011-06-27 |  | 51.38d |  |  |
| 188 | 1.4.2.7.2.1 | تركيب الصاج |  | 3d | 2011-06-20 | 2011-06-23 | 186 | 51.38d | 0d |  |
| 189 | 1.4.2.7.2.2 | صب الخرسانة و التشطيب النهائي |  | 4d | 2011-06-23 | 2011-06-27 | 188 | 51.38d | 0d |  |
| 190 | 1.4.2.8 | **أعمال تركيب الأبواب** |  | 6d | 2011-06-28 | 2011-07-04 |  | 51.38d |  |  |
| 191 | 1.4.2.8.1 | أعمال تركيب الأبواب |  | 6d | 2011-06-28 | 2011-07-04 | 189 | 51.38d | 0d |  |
| 192 | 1.4.2.9 | **تسليم المبنى** |  | 0d | 2011-07-04 | 2011-07-04 |  | 51.38d |  |  |
| 193 | 1.4.2.9.1 | تسليم المبنى | milestone | 0d | 2011-07-04 | 2011-07-04 | 160, 191, 172, 173, 174, 175, 176, 177, 178, 179, 180, 181, 170 | 51.38d |  |  |
| 194 | 1.4.3 | **أعمال الملحقات** |  | 78d | 2011-04-07 | 2011-07-03 |  | 52.38d |  |  |
| 195 | 1.4.3.1 | **أعمال التكسير** |  | 4d | 2011-04-07 | 2011-04-11 |  | 52.38d |  |  |
| 196 | 1.4.3.1.1 | تكسير أرضيات خرسانة |  | 4d | 2011-04-07 | 2011-04-11 | 2 | 52.38d | 0d | start no earlier than 2011-04-07 |
| 197 | 1.4.3.2 | **أعمال الحفر و الأساسات** |  | 30d | 2011-04-11 | 2011-05-15 |  | 52.38d |  |  |
| 198 | 1.4.3.2.1 | أعمال الحفر |  | 3d | 2011-04-11 | 2011-04-14 | 196 | 52.38d | 0d |  |
| 199 | 1.4.3.2.2 | الدمك على منسوب التأسيس |  | 2d | 2011-04-14 | 2011-04-17 | 198 | 52.38d | 0d |  |
| 200 | 1.4.3.2.3 | أعمال الخرسانة العادية للقواعد |  | 2d | 2011-04-17 | 2011-04-19 | 199 | 52.38d | 0d |  |
| 201 | 1.4.3.2.4 | أعمال الخرسانة المسلحة للقواعد |  | 4d | 2011-04-19 | 2011-04-24 | 200 | 52.38d | 0d |  |
| 202 | 1.4.3.2.5 | أعمال عزل القواعد |  | 2d | 2011-04-30 | 2011-05-01 | 207 | 52.38d | 0d |  |
| 203 | 1.4.3.2.6 | أعمال الردم و الدمك حتى منسوب القواعد |  | 2d | 2011-05-02 | 2011-05-03 | 202 | 52.38d | 0d |  |
| 204 | 1.4.3.2.7 | أعمال دكة الخرسانة العادية |  | 3d | 2011-05-04 | 2011-05-07 | 203 | 52.38d | 0d |  |
| 205 | 1.4.3.2.8 | أعمال دكة الخرسانة المسلحة |  | 7d | 2011-05-07 | 2011-05-15 | 204 | 52.38d | 0d |  |
| 206 | 1.4.3.3 | **أعمال الهيكل الإنشائى** |  | 26d | 2011-04-24 | 2011-05-23 |  | 52.38d |  |  |
| 207 | 1.4.3.3.1 | أعمال خرسانة الأعمدة |  | 5d | 2011-04-24 | 2011-04-30 | 201 | 52.38d | 0d |  |
| 208 | 1.4.3.3.2 | أعمال خرسانة الأسقف |  | 7d | 2011-05-15 | 2011-05-23 | 205 | 52.38d | 0d |  |

| ID | WBS | Task | Type | Duration | Start | Finish | Predecessors | Complete | Remaining | Total slack | Free slack |
| --- | --- | --- | --- | --- | --- | --- | --- | --- | --- | --- | --- |
| 209 | 1.4.3.4 | **أعمال المبانى** |  | 5d | 2011-06-08 | 2011-06-14 |  |  |  | 52.38d |  |
| 210 | 1.4.3.4.1 | أعمال المبانى |  | 5d | 2011-06-08 | 2011-06-14 | 208FS+15d |  |  | 52.38d | 0d |
| 211 | 1.4.3.5 | **أعمال البياض** |  | 10d | 2011-06-14 | 2011-06-26 |  |  |  | 52.38d |  |
| 212 | 1.4.3.5.1 | أعمال البياض الداخلى |  | 5d | 2011-06-14 | 2011-06-20 | 210 |  |  | 52.38d | 0d |
| 213 | 1.4.3.5.2 | أعمال البياض الخارجى |  | 5d | 2011-06-14 | 2011-06-20 | 210 |  |  | 52.38d | 0d |
| 214 | 1.4.3.5.3 | أعمال تركيب سيراميك الحوائط |  | 5d | 2011-06-20 | 2011-06-26 | 212, 213 |  |  | 52.38d | 0d |
| 215 | 1.4.3.6 | **أعمال الإليكتروميكانيك** |  | 9d | 2011-06-20 | 2011-06-29 |  |  |  | 55.38d |  |
| 216 | 1.4.3.6.1 | أعمال الإليكتروميكانيك |  | 9d | 2011-06-20 | 2011-06-29 | 212 |  |  | 69d | 3d |
| 217 | 1.4.3.7 | **أعمال التبليطات و الأرضيات** |  | 4d | 2011-06-26 | 2011-06-29 |  |  |  | 52.38d |  |
| 218 | 1.4.3.7.1 | أعمال تركيب سيراميك الأرضيات |  | 4d | 2011-06-26 | 2011-06-29 | 214 |  |  | 52.38d | 0d |
| 219 | 1.4.3.8 | **أعمال تركيب الحديد و الألومنيوم** |  | 3d | 2011-06-30 | 2011-07-03 |  |  |  | 52.38d |  |
| 220 | 1.4.3.8.1 | أعمال تركيب الحديد و الألومنيوم |  | 3d | 2011-06-30 | 2011-07-03 | 218 |  |  | 52.38d | 0d |
| 221 | 1.4.3.9 | **تسليم المبنى** |  | 0d | 2011-07-03 | 2011-07-03 |  |  |  | 52.38d |  |
| 222 | 1.4.3.9.1 | تسليم المبنى | milestone | 0d | 2011-07-03 | 2011-07-03 | 220, 216 |  |  | 52.38d |  |
| 223 | 1.5 | **مبنى إدارة المبيعات** |  | 121.75d | 2011-01-09 A | 2011-06-15 |  | 5% | 115.4d | 68d |  |
| 224 | 1.5.1 | **أعمال الإزالة** |  | 1.12d | 2011-01-09 A | 2011-01-09 A |  | 100% |  |  |  |
| 225 | 1.5.1.1 | إزالة الخرسانة العادية و البردورة |  | 1.12d | 2011-01-09 A | 2011-01-09 A | 6FS+7d | 100% |  |  |  |
| 226 | 1.5.2 | **أعمال الحفر و الأساسات** |  | 20.62d | 2011-01-10 A | 2011-02-23 |  | 75% | 5.13d | 168d |  |
| 227 | 1.5.2.1 | أعمال الحفر |  | 4d | 2011-01-10 A | 2011-01-13 A | 225 | 100% |  |  |  |
| 228 | 1.5.2.2 | الدمك على منسوب التأسيس |  | 2.12d | 2011-01-13 A | 2011-01-15 A | 227 | 100% |  |  |  |
| 229 | 1.5.2.3 | أعمال الخرسانة العادية للقواعد |  | 1.12d | 2011-01-15 A | 2011-01-15 A | 228 | 100% |  |  |  |
| 230 | 1.5.2.4 | أعمال الخرسانة المسلحة للقواعد و الميد |  | 7.25d | 2011-01-17 A | 2011-01-24 A | 229 | 100% |  |  |  |
| 231 | 1.5.2.5 | أعمال الردم و الدمك حتى منسوب القواعد |  | 1.62d | 2011-01-17 A | 2011-02-19 A | 233 | 100% |  |  |  |
| 232 | 1.5.2.6 | أعمال المبانى لقصة الردم |  | 2d | 2011-02-19 | 2011-02-20 | 238 |  |  | 171.12d |  |
| 233 | 1.5.2.7 | أعمال عزل القواعد و الميد |  | 2d | 2011-01-31 A | 2011-02-02 A | 232 | 100% |  |  |  |
| 234 | 1.5.2.8 | أعمال دكة خرسانة عادية |  | 2d | 2011-02-20 | 2011-02-21 | 231 |  |  | 0d |  |
| 235 | 1.5.2.9 | أعمال دكة خرسانة مسلحة داخل المبنى |  | 2d | 2011-02-21 | 2011-02-23 | 234 |  |  | 0d |  |

| ID | WBS | Task | Duration | Start | Finish | Predecessors | Complete | Remaining | Total slack | Free slack |
| --- | --- | --- | --- | --- | --- | --- | --- | --- | --- | --- |
| 236 | 1.5.3 | **أعمال الهيكل الإنشائى** | 39.12d | 2011-01-26 A | 2011-04-02 |  | 3% | 37.97d | 3d |  |
| 237 | 1.5.3.1 | **الدور الأرضى** | 18.12d | 2011-01-26 A | 2011-03-09 |  | 8% | 16.73d | 0d |  |
| 238 | 1.5.3.1.1 | أعمال خرسانة الأعمدة | 1d | 2011-01-26 A | 2011-02-13 A | 230 | 100% |  |  |  |
| 239 | 1.5.3.1.2 | أعمال خرسانة الأسقف | 12d | 2011-02-23 | 2011-03-09 | 235 |  |  | 0d |  |
| 240 | 1.5.3.2 | **الدور الأول** | 13d | 2011-03-09 | 2011-03-23 |  |  |  | 0d |  |
| 241 | 1.5.3.2.1 | أعمال خرسانة الأعمدة | 5d | 2011-03-09 | 2011-03-15 | 239 |  |  | 0d |  |
| 242 | 1.5.3.2.2 | أعمال خرسانة الأسقف | 8d | 2011-03-15 | 2011-03-23 | 241 |  |  | 0d |  |
| 243 | 1.5.3.3 | **غرفة السطح** | 8d | 2011-03-23 | 2011-04-02 |  |  |  | 3d |  |
| 244 | 1.5.3.3.1 | أعمال خرسانة الأعمدة | 4d | 2011-03-23 | 2011-03-28 | 242 |  |  | 3d | 0d |
| 245 | 1.5.3.3.2 | أعمال خرسانة الأسقف | 4d | 2011-03-28 | 2011-04-02 | 244 |  |  | 3d | 0d |
| 246 | 1.5.4 | **أعمال المبانى** | 25d | 2011-03-20 | 2011-04-17 |  |  |  | 3d |  |
| 247 | 1.5.4.1 | الدور الأرضى | 7d | 2011-03-20 | 2011-03-28 | 239FS+10d |  |  | 5d | 0d |
| 248 | 1.5.4.2 | الدور الأول | 7d | 2011-04-09 | 2011-04-16 | 242FS+14d |  |  | 0d |  |
| 249 | 1.5.4.3 | غرفة السطح و الدروة | 4d | 2011-04-13 | 2011-04-17 | 245FS+10d |  |  | 3d | 0d |
| 250 | 1.5.5 | **أعمال العزل** | 46d | 2011-03-28 | 2011-05-18 |  |  |  | 3d |  |
| 251 | 1.5.5.1 | أعمال عزل الحمامات | 10d | 2011-03-28 | 2011-04-09 | 247 |  |  | 19d | 13d |
| 252 | 1.5.5.2 | أعمال العزل | 7d | 2011-05-05 | 2011-05-14 | 256, 258, 257 |  |  | 0d |  |
| 253 | 1.5.5.3 | أعمال خرسانة الميول | 10d | 2011-05-08 | 2011-05-18 | 260 |  |  | 3d | 0d |
| 254 | 1.5.6 | **أعمال البياض** | 29d | 2011-04-05 | 2011-05-08 |  |  |  | 3d |  |
| 255 | 1.5.6.1 | **أعمال البياض الداخلى** | 27d | 2011-04-05 | 2011-05-05 |  |  |  | 0d |  |
| 256 | 1.5.6.1.1 | الدور الأرضى | 15d | 2011-04-05 | 2011-04-21 | 247FS+7d |  |  | 5d | 0d |
| 257 | 1.5.6.1.2 | غرفة السطح و الدروة | 5d | 2011-04-23 | 2011-04-28 | 249FS+5d, 251 |  |  | 6d |  |
| 258 | 1.5.6.1.3 | الدور الأول | 10d | 2011-04-24 | 2011-05-05 | 248FS+7d |  |  | 0d |  |
| 259 | 1.5.6.2 | **أعمال البياض الخارجى** | 15d | 2011-04-20 | 2011-05-08 |  |  |  | 3d |  |
| 260 | 1.5.6.2.1 | أعمال البياض الخارجى | 15d | 2011-04-20 | 2011-05-08 | 249FS+3d |  |  | 3d | 0d |

| ID | WBS | Task | Type | Duration | Start | Finish | Predecessors | Total slack | Free slack |
| --- | --- | --- | --- | --- | --- | --- | --- | --- | --- |
| 261 | 1.5.7 | **أعمال الإلكترو ميكانيك** |  | 59d | 2011-04-05 | 2011-06-11 |  | 5d |  |
| 262 | 1.5.7.1 | **أعمال الكهرباء** |  | 40d | 2011-04-05 | 2011-05-19 |  | 24d |  |
| 263 | 1.5.7.1.1 | الإنارة |  | 14d | 2011-04-05 | 2011-04-20 | 256SS | 52.33d | 50d |
| 264 | 1.5.7.1.2 | أعمال مكافحة الحريق |  | 25d | 2011-04-21 | 2011-05-19 | 256 | 24d |  |
| 265 | 1.5.7.1.3 | القوى |  | 20d | 2011-04-21 | 2011-05-14 | 256 | 29d |  |
| 266 | 1.5.7.1.4 | التليفونات |  | 20d | 2011-04-21 | 2011-05-14 | 256 | 29d |  |
| 267 | 1.5.7.2 | **أعمال الميكانيكا** |  | 44d | 2011-04-21 | 2011-06-11 |  | 5d |  |
| 268 | 1.5.7.2.1 | HVAC system |  | 44d | 2011-04-21 | 2011-06-11 | 256 | 5d |  |
| 269 | 1.5.7.2.2 | Fire Fihgting |  | 43d | 2011-04-21 | 2011-06-09 | 256 | 6d |  |
| 270 | 1.5.8 | **أعمال صب البردورة و الخرسانة العادية للأرصفة** |  | 6d | 2011-05-08 | 2011-05-14 |  | 29d |  |
| 271 | 1.5.8.1 | أعمال صب البردورة و الخرسانة العادية للأرصفة |  | 6d | 2011-05-08 | 2011-05-14 | 260 | 29d |  |
| 272 | 1.5.9 | **أعمال التبليطات و الأرضيات** |  | 12d | 2011-05-14 | 2011-05-26 |  | 3d |  |
| 273 | 1.5.9.1 | أرضيات البورسلين و الوزرات |  | 7d | 2011-05-14 | 2011-05-21 | 252 | 8d |  |
| 274 | 1.5.9.2 | أعمال السيراميك |  | 7d | 2011-05-18 | 2011-05-26 | 252, 253 | 3d |  |
| 275 | 1.5.10 | **أعمال الجرانيت و الرخام** |  | 15d | 2011-05-14 | 2011-05-30 |  | 0d |  |
| 276 | 1.5.10.1 | تركيب الرخام |  | 15d | 2011-05-14 | 2011-05-30 | 252 | 0d |  |
| 277 | 1.5.11 | **أعمال النجارة** |  | 3d | 2011-05-30 | 2011-06-02 |  | 12d |  |
| 278 | 1.5.11.1 | تركيب أعمال النجارة |  | 3d | 2011-05-30 | 2011-06-02 | 274, 273, 276 | 12d |  |
| 279 | 1.5.12 | **أعمال الحديد و الألومنيوم** |  | 5d | 2011-05-30 | 2011-06-05 |  | 10d |  |
| 280 | 1.5.12.1 | تركيب أعمال الحديد و الألومنيوم |  | 5d | 2011-05-30 | 2011-06-05 | 274, 273, 276 | 10d |  |
| 281 | 1.5.13 | **أعمال الدهانات** |  | 15d | 2011-05-30 | 2011-06-15 |  | 0d |  |
| 282 | 1.5.13.1 | أعمال الدهان الداخلى |  | 15d | 2011-05-30 | 2011-06-15 | 256, 258, 257, 274, 273, 276 | 0d |  |
| 283 | 1.5.13.2 | أعمال الدهان الخارجى |  | 15d | 2011-05-30 | 2011-06-15 | 260, 274, 273, 276 | 0d |  |
| 284 | 1.5.14 | **تسليم المبنى** |  | 0d | 2011-06-15 | 2011-06-15 |  | 0d |  |
| 285 | 1.5.14.1 | تسليم المبنى | milestone | 0d | 2011-06-15 | 2011-06-15 | 278, 280, 282, 283, 271, 268, 269, 263, 266, 265, 264 | 0d |  |

| ID | WBS | Task | Duration | Start | Finish | Predecessors | Total slack | Free slack |
| --- | --- | --- | --- | --- | --- | --- | --- | --- |
| 286 | 1.6 | **غرفة وحدة الحلقة الرئيسية** | 87d | 2011-03-12 | 2011-06-16 |  | 66.88d |  |
| 287 | 1.6.1 | **أعمال الحفر و الأساسات** | 27d | 2011-03-16 | 2011-04-16 |  | 66.88d |  |
| 288 | 1.6.1.1 | أعمال الحفر | 3d | 2011-03-16 | 2011-03-20 | 299 | 66.88d | 0d |
| 289 | 1.6.1.2 | الدمك على منسوب التأسيس | 2d | 2011-03-20 | 2011-03-21 | 288 | 66.88d | 0d |
| 290 | 1.6.1.3 | أعمال الخرسانة العادية للقواعد | 2d | 2011-03-22 | 2011-03-23 | 289 | 80.5d | 0d |
| 291 | 1.6.1.4 | أعمال الخرسانة المسلحة للقواعد و الميد | 4d | 2011-03-24 | 2011-03-28 | 290 | 80.5d | 0d |
| 292 | 1.6.1.5 | أعمال المبانى لقصة الردم | 2d | 2011-03-31 | 2011-04-03 | 301 | 66.88d | 0d |
| 293 | 1.6.1.6 | أعمال عزل القواعد و الميد | 2d | 2011-04-03 | 2011-04-05 | 292 | 66.88d | 0d |
| 294 | 1.6.1.7 | أعمال الردم و الدمك حتى منسوب القواعد | 2d | 2011-04-05 | 2011-04-07 | 293 | 80.5d | 0d |
| 295 | 1.6.1.8 | أعمال دكة خرسانة عادية 1 | 2d | 2011-04-07 | 2011-04-10 | 294 | 80.5d | 0d |
| 296 | 1.6.1.9 | أعمال دكة خرسانة عادية 2 | 2d | 2011-04-10 | 2011-04-12 | 295 | 66.88d | 0d |
| 297 | 1.6.1.10 | أعمال دكة خرسانة مسلحة | 3d | 2011-04-12 | 2011-04-16 | 296 | 66.88d | 0d |
| 298 | 1.6.2 | **أعمال الإزالة** | 4d | 2011-03-12 | 2011-03-16 |  | 66.88d |  |
| 299 | 1.6.2.1 | إزالة السور | 4d | 2011-03-12 | 2011-03-16 | 2FS+41d | 66.88d | 0d |
| 300 | 1.6.3 | **أعمال الهيكل الإنشائى** | 22d | 2011-03-28 | 2011-04-21 |  | 66.88d |  |
| 301 | 1.6.3.1 | أعمال خرسانة الأعمدة | 3d | 2011-03-28 | 2011-03-31 | 291 | 66.88d | 0d |
| 302 | 1.6.3.2 | أعمال خرسانة الأسقف | 6d | 2011-04-16 | 2011-04-21 | 297 | 66.88d | 0d |
| 303 | 1.6.4 | **أعمال المبانى** | 8d | 2011-05-03 | 2011-05-12 |  | 66.88d |  |
| 304 | 1.6.4.1 | الدور الأرضى | 6d | 2011-05-03 | 2011-05-10 | 302FS+10d | 80.5d | 0d |
| 305 | 1.6.4.2 | الدروة | 2d | 2011-05-10 | 2011-05-12 | 304 | 70.88d | 0d |
| 306 | 1.6.5 | **أعمال البياض** | 9d | 2011-05-16 | 2011-05-25 |  | 66.88d |  |
| 307 | 1.6.5.1 | **أعمال البياض الداخلى** | 6d | 2011-05-16 | 2011-05-22 |  | 66.88d |  |
| 308 | 1.6.5.1.1 | الدور الأرضى | 6d | 2011-05-16 | 2011-05-22 | 304FS+5d | 80.5d | 0d |
| 309 | 1.6.5.1.2 | الدروة | 2d | 2011-05-16 | 2011-05-17 | 305FS+3d | 84.5d | 4d |

| ID | WBS | Task | Type | Duration | Start | Finish | Predecessors | Total slack | Free slack |
| --- | --- | --- | --- | --- | --- | --- | --- | --- | --- |
| 310 | 1.6.5.2 | **أعمال البياض الخارجى** |  | 7d | 2011-05-18 | 2011-05-25 |  | 76.88d |  |
| 311 | 1.6.5.2.1 | أعمال البياض الخارجى |  | 7d | 2011-05-18 | 2011-05-25 | 305FS+5d | 90.5d | 0d |
| 312 | 1.6.6 | **أعمال الإلكترو ميكانيك** |  | 12d | 2011-05-18 | 2011-05-31 |  | 81.88d |  |
| 313 | 1.6.6.1 | **أعمال الكهرباء** |  | 12d | 2011-05-18 | 2011-05-31 |  | 81.88d |  |
| 314 | 1.6.6.1.1 | اناره |  | 9d | 2011-05-18 | 2011-05-28 | 308SS+2d | 98.5d | 18d |
| 315 | 1.6.6.1.2 | أعمال مكافحة الحريق |  | 6d | 2011-05-22 | 2011-05-29 | 308 | 83.88d | 17d |
| 316 | 1.6.6.1.3 | قوى |  | 8d | 2011-05-22 | 2011-05-31 | 308 | 81.88d | 15d |
| 317 | 1.6.7 | **أعمال العزل** |  | 9d | 2011-05-22 | 2011-06-01 |  | 66.88d |  |
| 318 | 1.6.7.1 | أعمال العزل |  | 7d | 2011-05-22 | 2011-05-30 | 308, 309 | 66.88d | 0d |
| 319 | 1.6.7.2 | أعمال خرسانة الميول |  | 5d | 2011-05-26 | 2011-06-01 | 318SS+4d | 66.88d | 0d |
| 320 | 1.6.8 | **أعمال الأرصفة و البردورة** |  | 10d | 2011-05-25 | 2011-06-06 |  | 76.88d |  |
| 321 | 1.6.8.1 | أعمال الأرصفة و البردورة |  | 10d | 2011-05-25 | 2011-06-06 | 311 | 76.88d | 10d |
| 322 | 1.6.9 | **أعمال التبليطات و الأرضيات** |  | 7d | 2011-06-01 | 2011-06-09 |  | 66.88d |  |
| 323 | 1.6.9.1 | أرضيات السيراميك |  | 7d | 2011-06-01 | 2011-06-09 | 318, 319 | 80.5d | 0d |
| 324 | 1.6.10 | **أعمال الحديد** |  | 3d | 2011-06-09 | 2011-06-12 |  | 70.88d |  |
| 325 | 1.6.10.1 | تركيب أعمال الحديد |  | 3d | 2011-06-09 | 2011-06-12 | 323 | 70.88d | 4d |
| 326 | 1.6.11 | **أعمال الدهانات** |  | 7d | 2011-06-09 | 2011-06-16 |  | 66.88d |  |
| 327 | 1.6.11.1 | أعمال الدهان الداخلى |  | 7d | 2011-06-09 | 2011-06-16 | 308, 309, 323 | 66.88d | 0d |
| 328 | 1.6.11.2 | أعمال الدهان الخارجى |  | 7d | 2011-06-09 | 2011-06-16 | 311, 323 | 66.88d | 0d |
| 329 | 1.6.12 | **تسليم المبنى** |  | 0d | 2011-06-16 | 2011-06-16 |  | 66.88d |  |
| 330 | 1.6.12.1 | تسليم المبنى | milestone | 0d | 2011-06-16 | 2011-06-16 | 325, 327, 328, 321, 314, 315, 316 | 66.88d |  |
| 331 | 1.7 | **أعمال الموقع العام** |  | 130d | 2011-04-02 | 2011-08-25 |  | 4.88d |  |
| 332 | 1.7.1 | **أعمال الميكانيكا** |  | 50d | 2011-04-02 | 2011-05-28 |  | 84.88d |  |
| 333 | 1.7.1.1 | under ground fire pipe installation |  | 15d | 2011-04-02 | 2011-04-18 | 2FS+60d | 119.88d |  |
| 334 | 1.7.1.2 | under ground raw water pipe installation |  | 30d | 2011-04-02 | 2011-05-05 | 2FS+60d | 104.88d |  |
| 335 | 1.7.1.3 | under ground chilled water pipe installation, insulation and cladding upvc pipes |  | 30d | 2011-04-02 | 2011-05-05 | 2FS+60d | 104.88d |  |
| 336 | 1.7.1.4 | under ground vegetable oil pipe installation |  | 20d | 2011-04-02 | 2011-04-24 | 2FS+60d | 114.88d |  |
| 337 | 1.7.1.5 | fire fighting pipes installation on fence |  | 25d | 2011-04-02 | 2011-04-30 | 2FS+60d | 84.88d | 0d |
| 338 | 1.7.1.6 | raw water pipes installation on fence |  | 25d | 2011-04-02 | 2011-04-30 | 2FS+60d | 109.88d |  |
| 339 | 1.7.1.7 | fire hose cabient and fire extinguisher |  | 25d | 2011-04-30 | 2011-05-28 | 337 | 98.5d |  |

| ID | WBS | Task | Duration | Start | Finish | Predecessors | Total slack | Free slack |
| --- | --- | --- | --- | --- | --- | --- | --- | --- |
| 340 | 1.7.2 | **LANDSCAPE** | 90d | 2011-05-17 | 2011-08-25 |  | 4.88d |  |
| 341 | 1.7.2.1 | تدبيش | 20d | 2011-08-03 | 2011-08-25 | 342 | 4.88d |  |
| 342 | 1.7.2.2 | أسفلت | 50d | 2011-06-08 | 2011-08-03 | 343 | 4.88d | 0d |
| 343 | 1.7.2.3 | أرصفة | 20d | 2011-05-17 | 2011-06-08 | 2FS+100d | 4.88d | 0d |
| 344 | 1.7.3 | **أعمال الكهرباء** | 20d | 2011-05-21 | 2011-06-12 |  | 71.88d |  |
| 345 | 1.7.3.1 | الإنارة | 20d | 2011-05-21 | 2011-06-12 | 2FS+103d | 71.88d |  |
| 346 | 1.7.3.2 | أعمال مكافحة الحريق | 20d | 2011-05-21 | 2011-06-12 | 2FS+103d | 71.88d |  |
| 347 | 1.7.3.3 | التليفونات | 20d | 2011-05-21 | 2011-06-12 | 2FS+103d | 71.88d |  |
| 348 | 1.7.3.4 | كاميرات المراقبة | 20d | 2011-05-21 | 2011-06-12 | 2FS+103d | 71.88d |  |
| 349 | 1.7.3.5 | كابلات | 20d | 2011-05-21 | 2011-06-12 | 2FS+103d | 71.88d |  |
| 350 | 1.8 | **مبنى معدات التبريد** | 93d | 2011-03-31 | 2011-07-13 |  | 42.88d |  |
| 351 | 1.8.1 | **أعمال الحفر و الأساسات** | 33d | 2011-03-31 | 2011-05-08 |  | 42.88d |  |
| 352 | 1.8.1.1 | أعمال الحفر | 5d | 2011-03-31 | 2011-04-06 | 2FS+59d | 42.88d | 0d |
| 353 | 1.8.1.2 | الدمك على منسوب التأسيس | 3d | 2011-04-06 | 2011-04-10 | 352 | 56.5d | 0d |
| 354 | 1.8.1.3 | أعمال الخرسانة العادية للقواعد | 3d | 2011-04-10 | 2011-04-13 | 353 | 42.88d | 0d |
| 355 | 1.8.1.4 | أعمال الخرسانة المسلحة للقواعد و الميد | 5d | 2011-04-13 | 2011-04-18 | 354 | 42.88d | 0d |
| 356 | 1.8.1.5 | أعمال المبانى لقصة الردم | 2d | 2011-04-23 | 2011-04-25 | 363 | 42.88d | 0d |
| 357 | 1.8.1.6 | أعمال عزل القواعد و الميد | 1d | 2011-04-25 | 2011-04-26 | 356 | 42.88d | 0d |
| 358 | 1.8.1.7 | أعمال الردم و الدمك حتى منسوب القواعد | 2d | 2011-04-26 | 2011-04-28 | 357 | 42.88d | 0d |
| 359 | 1.8.1.8 | أعمال دكة خرسانة عادية 1 | 2d | 2011-04-28 | 2011-05-01 | 358 | 42.88d | 0d |
| 360 | 1.8.1.9 | أعمال دكة خرسانة عادية 2 | 2d | 2011-05-01 | 2011-05-03 | 359 | 42.88d | 0d |
| 361 | 1.8.1.10 | أعمال دكة خرسانة مسلحة | 4d | 2011-05-03 | 2011-05-08 | 360 | 56.5d | 0d |
| 362 | 1.8.2 | **أعمال الهيكل الإنشائى** | 26d | 2011-04-19 | 2011-05-17 |  | 42.88d |  |
| 363 | 1.8.2.1 | أعمال خرسانة الأعمدة | 4d | 2011-04-19 | 2011-04-23 | 355 | 42.88d | 0d |
| 364 | 1.8.2.2 | أعمال خرسانة الأسقف | 9d | 2011-05-08 | 2011-05-17 | 361 | 42.88d | 0d |

| ID | WBS | Task | Duration | Start | Finish | Predecessors | Total slack | Free slack |
| --- | --- | --- | --- | --- | --- | --- | --- | --- |
| 365 | 1.8.3 | **أعمال المبانى** | 9d | 2011-05-29 | 2011-06-08 |  | 42.88d |  |
| 366 | 1.8.3.1 | الدور الأرضى | 7d | 2011-05-29 | 2011-06-06 | 364FS+10d | 42.88d | 0d |
| 367 | 1.8.3.2 | السطح | 2d | 2011-06-06 | 2011-06-08 | 366 | 46.88d | 0d |
| 368 | 1.8.4 | **أعمال الإلكترو ميكانيك** | 24d | 2011-06-06 | 2011-07-03 |  | 52.88d |  |
| 369 | 1.8.4.1 | **أعمال الميكانيكا** | 24d | 2011-06-06 | 2011-07-03 | 366 | 52.88d |  |
| 370 | 1.8.4.1.1 | HVAC | 24d | 2011-06-06 | 2011-07-03 | 366 | 52.88d | 10d |
| 371 | 1.8.4.2 | **أعمال الكهرباء** | 9d | 2011-06-06 | 2011-06-15 |  | 67.88d |  |
| 372 | 1.8.4.2.1 | الإنارة | 7d | 2011-06-06 | 2011-06-13 | 366 | 69.88d | 27d |
| 373 | 1.8.4.2.2 | القوي | 9d | 2011-06-06 | 2011-06-15 | 366 | 67.88d | 25d |
| 374 | 1.8.5 | **أعمال البياض و التكسية** | 24d | 2011-06-12 | 2011-07-09 |  | 42.88d |  |
| 375 | 1.8.5.1 | **أعمال البياض الداخلى** | 6d | 2011-06-12 | 2011-06-18 |  | 42.88d |  |
| 376 | 1.8.5.1.1 | الدور الأرضى | 6d | 2011-06-12 | 2011-06-18 | 366FS+5d | 42.88d | 0d |
| 377 | 1.8.5.1.2 | السطح | 2d | 2011-06-12 | 2011-06-13 | 367FS+3d | 46.88d | 4d |
| 378 | 1.8.5.2 | **أعمال البياض الخارجى** | 7d | 2011-06-14 | 2011-06-21 |  | 52.88d |  |
| 379 | 1.8.5.2.1 | أعمال البياض الخارجى | 7d | 2011-06-14 | 2011-06-21 | 367FS+5d | 66.5d | 0d |
| 380 | 1.8.5.3 | **أعمال التكسية** | 5d | 2011-07-03 | 2011-07-09 |  | 47.88d |  |
| 381 | 1.8.5.3.1 | تركيب بلاط سنجابى | 5d | 2011-07-03 | 2011-07-09 | 383 | 47.88d | 5d |
| 382 | 1.8.6 | **أعمال العزل** | 13d | 2011-06-18 | 2011-07-03 |  | 42.88d |  |
| 383 | 1.8.6.1 | أعمال العزل | 13d | 2011-06-18 | 2011-07-03 | 376, 377 | 42.88d | 0d |
| 384 | 1.8.6.2 | أعمال خرسانة الميول | 3d | 2011-06-21 | 2011-06-25 | 383SS+3d | 59.88d | 17d |
| 385 | 1.8.7 | **أعمال الأرصفة و البردورة** | 6d | 2011-06-21 | 2011-06-28 |  | 56.88d |  |
| 386 | 1.8.7.1 | أعمال الأرصفة و البردورة | 6d | 2011-06-21 | 2011-06-28 | 379 | 56.88d | 14d |
| 387 | 1.8.8 | **أعمال الدهانات** | 7d | 2011-07-03 | 2011-07-10 |  | 42.88d |  |
| 388 | 1.8.8.1 | أعمال الدهان الداخلى | 7d | 2011-07-03 | 2011-07-10 | 376, 377, 383 | 42.88d | 0d |
| 389 | 1.8.8.2 | أعمال الدهان الخارجى | 7d | 2011-07-03 | 2011-07-10 | 379, 383 | 42.88d | 0d |

| ID | WBS | Task | Type | Duration | Start | Finish | Predecessors | Total slack | Free slack |
| --- | --- | --- | --- | --- | --- | --- | --- | --- | --- |
| 390 | 1.8.9 | **أعمال الحديد** |  | 3d | 2011-07-11 | 2011-07-13 |  | 42.88d |  |
| 391 | 1.8.9.1 | تركيب أعمال الحديد |  | 3d | 2011-07-11 | 2011-07-13 | 388, 389 | 56.5d | 0d |
| 392 | 1.8.10 | **تسليم المبنى** |  | 0d | 2011-07-13 | 2011-07-13 |  | 42.88d |  |
| 393 | 1.8.10.1 | تسليم المبنى | milestone | 0d | 2011-07-13 | 2011-07-13 | 391, 381, 386, 370, 372, 373, 384 | 42.88d |  |
| 394 | 1.9 | **غرفة توزيع رقم 2** |  | 85d | 2011-02-27 | 2011-06-02 |  | 79.88d |  |
| 395 | 1.9.1 | **أعمال الحفر و الأساسات** |  | 33d | 2011-02-27 | 2011-04-05 |  | 79.88d |  |
| 396 | 1.9.1.1 | أعمال الحفر |  | 3d | 2011-02-27 | 2011-03-02 | 2FS+30d | 79.88d | 0d |
| 397 | 1.9.1.2 | الدمك على منسوب التأسيس |  | 2d | 2011-03-02 | 2011-03-05 | 396 | 79.88d | 0d |
| 398 | 1.9.1.3 | أعمال الخرسانة العادية للقواعد |  | 2d | 2011-03-05 | 2011-03-07 | 397 | 79.88d | 0d |
| 399 | 1.9.1.4 | أعمال الخرسانة المسلحة للقواعد و الميد |  | 7d | 2011-03-07 | 2011-03-15 | 398 | 79.88d | 0d |
| 400 | 1.9.1.5 | أعمال المبانى لقصة الردم |  | 4d | 2011-03-26 | 2011-03-29 | 405 | 79.88d | 0d |
| 401 | 1.9.1.6 | أعمال عزل القواعد و الميد |  | 2d | 2011-03-29 | 2011-03-31 | 400 | 79.88d | 0d |
| 402 | 1.9.1.7 | أعمال الردم و الدمك حتى منسوب القواعد |  | 2d | 2011-03-31 | 2011-04-03 | 401 | 79.88d | 0d |
| 403 | 1.9.1.8 | أعمال دكة خرسانة عادية |  | 2d | 2011-04-03 | 2011-04-05 | 402 | 79.88d | 0d |
| 404 | 1.9.2 | **أعمال الهيكل الإنشائى** |  | 33d | 2011-03-15 | 2011-04-20 |  | 79.88d |  |
| 405 | 1.9.2.1 | أعمال خرسانة الأعمدة |  | 9d | 2011-03-15 | 2011-03-24 | 399 | 79.88d | 0d |
| 406 | 1.9.2.2 | أعمال خرسانة الأسقف |  | 14d | 2011-04-05 | 2011-04-20 | 403 | 79.88d | 0d |
| 407 | 1.9.3 | **أعمال المبانى** |  | 9d | 2011-05-02 | 2011-05-12 |  | 79.88d |  |
| 408 | 1.9.3.1 | الدور الأرضى |  | 7d | 2011-05-02 | 2011-05-10 | 406FS+10d | 79.88d | 0d |
| 409 | 1.9.3.2 | الدروة |  | 2d | 2011-05-10 | 2011-05-12 | 408 | 79.88d | 0d |
| 410 | 1.9.4 | **أعمال الإلكترو ميكانيك** |  | 7d | 2011-05-10 | 2011-05-17 |  | 93.88d |  |
| 411 | 1.9.4.1 | **اعمال الكهرباء** |  | 7d | 2011-05-10 | 2011-05-17 |  | 93.88d |  |
| 412 | 1.9.4.1.1 | الانارة |  | 7d | 2011-05-10 | 2011-05-17 | 408 | 93.88d | 14d |
| 413 | 1.9.4.1.2 | القوى |  | 7d | 2011-05-10 | 2011-05-17 | 408 | 93.88d | 14d |
| 414 | 1.9.4.1.3 | أعمال الحريق |  | 7d | 2011-05-10 | 2011-05-17 | 408 | 93.88d | 14d |

| ID | WBS | Task | Type | Duration | Start | Finish | Predecessors | Total slack | Free slack |
| --- | --- | --- | --- | --- | --- | --- | --- | --- | --- |
| 415 | 1.9.5 | **أعمال البياض** |  | 9d | 2011-05-16 | 2011-05-25 |  | 79.88d |  |
| 416 | 1.9.5.1 | **أعمال البياض الداخلى** |  | 5d | 2011-05-16 | 2011-05-21 |  | 79.88d |  |
| 417 | 1.9.5.1.1 | الدور الأرضى |  | 5d | 2011-05-16 | 2011-05-21 | 408FS+5d | 79.88d | 0d |
| 418 | 1.9.5.1.2 | الدروة |  | 3d | 2011-05-16 | 2011-05-18 | 409FS+3d | 81.88d | 2d |
| 419 | 1.9.5.2 | **أعمال البياض الخارجى** |  | 7d | 2011-05-18 | 2011-05-25 |  | 79.88d |  |
| 420 | 1.9.5.2.1 | أعمال البياض الخارجى |  | 7d | 2011-05-18 | 2011-05-25 | 409FS+5d | 79.88d | 0d |
| 421 | 1.9.6 | **أعمال الأرصفة و البردورة والأرضيات** |  | 9d | 2011-05-21 | 2011-05-31 |  | 81.88d |  |
| 422 | 1.9.6.1 | اعمال الخرسانة العادية لمجري الكابلات |  | 6d | 2011-05-21 | 2011-05-28 | 417 | 84.88d | 5d |
| 423 | 1.9.6.2 | أعمال الأرصفة و البردورة |  | 5d | 2011-05-25 | 2011-05-31 | 420 | 81.88d | 2d |
| 424 | 1.9.6.3 | أعمال سيراميك السطح |  | 5d | 2011-05-25 | 2011-05-31 | 420 | 81.88d | 2d |
| 425 | 1.9.7 | **أعمال العزل** |  | 7d | 2011-05-21 | 2011-05-29 |  | 79.88d |  |
| 426 | 1.9.7.1 | أعمال العزل |  | 4d | 2011-05-21 | 2011-05-25 | 417, 418 | 79.88d | 0d |
| 427 | 1.9.7.2 | أعمال خرسانة الميول |  | 4d | 2011-05-24 | 2011-05-29 | 426SS+3d | 83.88d | 4d |
| 428 | 1.9.8 | **أعمال الدهانات** |  | 8d | 2011-05-21 | 2011-05-30 |  | 79.88d |  |
| 429 | 1.9.8.1 | أعمال الدهان الداخلى |  | 7d | 2011-05-21 | 2011-05-29 | 417, 418 | 80.88d | 1d |
| 430 | 1.9.8.2 | أعمال الدهان الخارجى |  | 4d | 2011-05-25 | 2011-05-30 | 420, 426 | 79.88d | 0d |
| 431 | 1.9.9 | **أعمال الحديد** |  | 3d | 2011-05-30 | 2011-06-02 |  | 79.88d |  |
| 432 | 1.9.9.1 | تركيب أعمال الحديد |  | 3d | 2011-05-30 | 2011-06-02 | 429, 430 | 79.88d | 0d |
| 433 | 1.9.10 | **تسليم المبنى** |  | 0d | 2011-06-02 | 2011-06-02 |  | 79.88d |  |
| 434 | 1.9.10.1 | تسليم المبنى | milestone | 0d | 2011-06-02 | 2011-06-02 | 432, 423, 424, 422, 412, 413, 414, 427 | 79.88d |  |
| 435 | 1.10 | **غرفة المحولات** |  | 82d | 2011-03-06 | 2011-06-06 |  | 76.88d |  |
| 436 | 1.10.1 | **أعمال الحفر و الأساسات** |  | 23d | 2011-03-06 | 2011-03-31 |  | 76.88d |  |
| 437 | 1.10.1.1 | أعمال الحفر |  | 2d | 2011-03-06 | 2011-03-08 | 2FS+36d | 76.88d | 0d |
| 438 | 1.10.1.2 | الدمك على منسوب التأسيس |  | 1d | 2011-03-08 | 2011-03-09 | 437 | 76.88d | 0d |
| 439 | 1.10.1.3 | أعمال الخرسانة العادية للقواعد |  | 4d | 2011-03-09 | 2011-03-14 | 438 | 90.5d | 0d |
| 440 | 1.10.1.4 | أعمال الخرسانة المسلحة للقواعد و الميد |  | 4d | 2011-03-14 | 2011-03-19 | 439 | 76.88d | 0d |
| 441 | 1.10.1.5 | أعمال المبانى لقصة الردم |  | 2d | 2011-03-23 | 2011-03-24 | 446 | 90.5d | 0d |
| 442 | 1.10.1.6 | أعمال عزل القواعد والميد |  | 2d | 2011-03-26 | 2011-03-27 | 441 | 90.5d | 0d |
| 443 | 1.10.1.7 | أعمال الردم و الدمك حتى منسوب القواعد |  | 2d | 2011-03-27 | 2011-03-29 | 442 | 76.88d | 0d |
| 444 | 1.10.1.8 | أعمال دكة خرسانة عادية |  | 2d | 2011-03-29 | 2011-03-31 | 443 | 76.88d | 0d |

| ID | WBS | Task | Duration | Start | Finish | Predecessors | Total slack | Free slack |
| --- | --- | --- | --- | --- | --- | --- | --- | --- |
| 445 | 1.10.2 | **أعمال الهيكل الإنشائى** | 26d | 2011-03-19 | 2011-04-17 |  | 76.88d |  |
| 446 | 1.10.2.1 | أعمال خرسانة الأعمدة | 4d | 2011-03-19 | 2011-03-22 | 440 | 76.88d | 0d |
| 447 | 1.10.2.2 | أعمال خرسانة الأسقف | 14d | 2011-03-31 | 2011-04-17 | 444 | 76.88d | 0d |
| 448 | 1.10.3 | **أعمال المبانى** | 7d | 2011-04-27 | 2011-05-05 |  | 76.88d |  |
| 449 | 1.10.3.1 | الدور الأرضى | 5d | 2011-04-27 | 2011-05-03 | 447FS+10d | 76.88d | 0d |
| 450 | 1.10.3.2 | الدروة | 2d | 2011-05-03 | 2011-05-05 | 449 | 90.5d | 0d |
| 451 | 1.10.4 | **أعمال الميكانيكا** | 12d | 2011-05-03 | 2011-05-16 |  | 94.88d |  |
| 452 | 1.10.4.1 | HVAC | 12d | 2011-05-03 | 2011-05-16 | 449 | 108.5d | 18d |
| 453 | 1.10.5 | **اعمال الكهرباء** | 5d | 2011-05-03 | 2011-05-09 |  | 101.88d |  |
| 454 | 1.10.5.1 | الإنارة | 5d | 2011-05-03 | 2011-05-09 | 449 | 115.5d | 25d |
| 455 | 1.10.5.2 | القوى | 5d | 2011-05-03 | 2011-05-09 | 449 | 115.5d | 25d |
| 456 | 1.10.5.3 | مكافحة الحريق | 5d | 2011-05-03 | 2011-05-09 | 449 | 115.5d | 25d |
| 457 | 1.10.6 | **أعمال البياض** | 5d | 2011-05-11 | 2011-05-16 |  | 76.88d |  |
| 458 | 1.10.6.1 | أعمال البياض الداخلى | 5d | 2011-05-11 | 2011-05-16 | 450FS+5d | 86.88d | 0d |
| 459 | 1.10.6.2 | أعمال البياض الخارجى | 5d | 2011-05-11 | 2011-05-16 | 450FS+5d | 76.88d | 0d |
| 460 | 1.10.7 | **الأعمال الخارجية** | 18d | 2011-05-17 | 2011-06-06 |  | 76.88d |  |
| 461 | 1.10.7.1 | اعمال عزل الرطوبة والحرارة | 3d | 2011-05-17 | 2011-05-19 | 459 | 90.5d | 0d |
| 462 | 1.10.7.2 | أعمال الخرسانة العادية لمجري الكابلات | 8d | 2011-05-17 | 2011-05-25 | 458 | 100.5d | 10d |
| 463 | 1.10.7.3 | أعمال الخرسانة وصب البردورة | 8d | 2011-05-17 | 2011-05-25 | 459 | 100.5d | 10d |
| 464 | 1.10.7.4 | أعمال خرسانة الميول | 5d | 2011-05-21 | 2011-05-25 | 461 | 90.5d | 0d |
| 465 | 1.10.7.5 | أعمال مواسيرصرف المطر | 5d | 2011-05-25 | 2011-05-31 | 464 | 76.88d | 0d |
| 466 | 1.10.7.6 | أعمال سيراميك الأسطح | 5d | 2011-05-31 | 2011-06-06 | 465 | 90.5d | 0d |
| 467 | 1.10.8 | **أعمال الدهانات** | 7d | 2011-05-17 | 2011-05-24 |  | 86.88d |  |
| 468 | 1.10.8.1 | أعمال الدهان الداخلى | 7d | 2011-05-17 | 2011-05-24 | 458 | 100.5d | 0d |

| ID | WBS | Task | Type | Duration | Start | Finish | Predecessors | Total slack | Free slack |
| --- | --- | --- | --- | --- | --- | --- | --- | --- | --- |
| 469 | 1.10.9 | **أعمال تركيب الحديد** |  | 1d | 2011-05-24 | 2011-05-25 |  | 86.88d |  |
| 470 | 1.10.9.1 | أعمال تركيب الحديد |  | 1d | 2011-05-24 | 2011-05-25 | 468, 458, 459 | 86.88d | 10d |
| 471 | 1.10.10 | **تسليم المبنى** |  | 0d | 2011-06-06 | 2011-06-06 |  | 76.88d |  |
| 472 | 1.10.10.1 | تسليم المبنى | milestone | 0d | 2011-06-06 | 2011-06-06 | 462, 463, 470, 454, 455, 456, 452, 466 | 76.88d |  |
| 473 | 1.11 | **غرفة الأمن و البوابات** |  | 65d | 2011-06-01 | 2011-08-13 |  | 15.88d |  |
| 474 | 1.11.1 | **أعمال الإزالة** |  | 3d | 2011-06-01 | 2011-06-05 |  | 15.88d |  |
| 475 | 1.11.1.1 | إزالة السور و المبنى القديم |  | 3d | 2011-06-01 | 2011-06-05 | 2FS+114d | 15.88d | 0d |
| 476 | 1.11.2 | **أعمال الحفر و الأساسات** |  | 25d | 2011-06-05 | 2011-07-03 |  | 15.88d |  |
| 477 | 1.11.2.1 | أعمال الحفر |  | 2d | 2011-06-05 | 2011-06-07 | 475 | 15.88d | 0d |
| 478 | 1.11.2.2 | الدمك على منسوب التأسيس |  | 2d | 2011-06-07 | 2011-06-09 | 477 | 15.88d | 0d |
| 479 | 1.11.2.3 | أعمال الخرسانة العادية للقواعد |  | 2d | 2011-06-09 | 2011-06-12 | 478 | 15.88d | 0d |
| 480 | 1.11.2.4 | أعمال الخرسانة المسلحة للقواعد و الميد |  | 5d | 2011-06-12 | 2011-06-16 | 479 | 15.88d | 0d |
| 481 | 1.11.2.5 | أعمال المبانى لقصة الردم |  | 2d | 2011-06-22 | 2011-06-25 | 487 | 15.88d | 0d |
| 482 | 1.11.2.6 | أعمال عزل القواعد و الميد |  | 1d | 2011-06-25 | 2011-06-26 | 481 | 15.88d | 0d |
| 483 | 1.11.2.7 | أعمال الردم و الدمك حتى منسوب القواعد |  | 2d | 2011-06-26 | 2011-06-28 | 482 | 15.88d | 0d |
| 484 | 1.11.2.8 | أعمال دكة خرسانة عادية 1 |  | 2d | 2011-06-28 | 2011-06-30 | 483 | 29.5d | 0d |
| 485 | 1.11.2.9 | أعمال دكة خرسانة عادية 2 |  | 2d | 2011-06-30 | 2011-07-03 | 484 | 29.5d | 0d |
| 486 | 1.11.3 | **أعمال الهيكل الإنشائى** |  | 29d | 2011-06-18 | 2011-07-19 |  | 15.88d |  |
| 487 | 1.11.3.1 | أعمال خرسانة الأعمدة |  | 5d | 2011-06-18 | 2011-06-22 | 480 | 15.88d | 0d |
| 488 | 1.11.3.2 | أعمال خرسانة الأسقف |  | 15d | 2011-07-03 | 2011-07-19 | 485 | 15.88d | 0d |
| 489 | 1.11.4 | **أعمال المبانى** |  | 6d | 2011-07-21 | 2011-07-28 |  | 15.88d |  |
| 490 | 1.11.4.1 | الدور الأرضى |  | 6d | 2011-07-21 | 2011-07-28 | 488FS+2d | 15.88d | 0d |
| 491 | 1.11.4.2 | الدروة |  | 5d | 2011-07-21 | 2011-07-27 | 490SS | 17.88d | 0d |
| 492 | 1.11.5 | **أعمال الإلكترو ميكانيك** |  | 14d | 2011-07-28 | 2011-08-13 |  | 15.88d |  |
| 493 | 1.11.5.1 | **اعمال الكهرباء** |  | 3d | 2011-07-28 | 2011-08-01 |  | 26.88d |  |
| 494 | 1.11.5.1.1 | الإنارة |  | 2d | 2011-07-28 | 2011-07-31 | 490 | 41.5d | 12d |
| 495 | 1.11.5.1.2 | التليفونات |  | 3d | 2011-07-28 | 2011-08-01 | 490 | 40.5d | 11d |
| 496 | 1.11.5.1.3 | أعمال مكافحة الحريق |  | 2d | 2011-07-28 | 2011-07-31 | 490 | 41.5d | 12d |
| 497 | 1.11.5.1.4 | القوى |  | 2d | 2011-07-28 | 2011-07-31 | 490 | 41.5d | 12d |

| ID | WBS | Task | Type | Duration | Start | Finish | Predecessors | Total slack | Free slack |
| --- | --- | --- | --- | --- | --- | --- | --- | --- | --- |
| 498 | 1.11.5.2 | **اعمال الميكانيكا** |  | 3d | 2011-08-10 | 2011-08-13 |  | 15.88d |  |
| 499 | 1.11.5.2.1 | اجهزة تكييف |  | 3d | 2011-08-10 | 2011-08-13 | 519SS+2d | 29.5d | 0d |
| 500 | 1.11.6 | **أعمال البياض** |  | 4d | 2011-07-28 | 2011-08-02 |  | 17.88d |  |
| 501 | 1.11.6.1 | **أعمال البياض الداخلى** |  | 4d | 2011-07-28 | 2011-08-02 |  | 15.88d |  |
| 502 | 1.11.6.1.1 | الدور الأرضى |  | 2d | 2011-07-31 | 2011-08-02 | 490FS+2d | 15.88d | 0d |
| 503 | 1.11.6.1.2 | الدروة |  | 2d | 2011-07-28 | 2011-07-31 | 491FS+1d | 31.5d | 2d |
| 504 | 1.11.6.2 | **أعمال البياض الخارجى** |  | 3d | 2011-07-30 | 2011-08-02 |  | 21.88d |  |
| 505 | 1.11.6.2.1 | أعمال البياض الخارجى |  | 3d | 2011-07-30 | 2011-08-02 | 491FS+2d | 35.5d | 0d |
| 506 | 1.11.7 | **أعمال العزل** |  | 4d | 2011-08-02 | 2011-08-07 |  | 15.88d |  |
| 507 | 1.11.7.1 | أعمال العزل |  | 2d | 2011-08-02 | 2011-08-04 | 502, 503 | 15.88d | 0d |
| 508 | 1.11.7.2 | أعمال خرسانة الميول |  | 4d | 2011-08-02 | 2011-08-07 | 505 | 21.88d | 6d |
| 509 | 1.11.8 | **أعمال الأرصفة و البردورة** |  | 4d | 2011-08-02 | 2011-08-07 |  | 21.88d |  |
| 510 | 1.11.8.1 | أعمال الأرصفة و البردورة |  | 4d | 2011-08-02 | 2011-08-07 | 505 | 21.88d | 6d |
| 511 | 1.11.9 | **أعمال التبليطات و الأرضيات** |  | 3d | 2011-08-04 | 2011-08-07 |  | 15.88d |  |
| 512 | 1.11.9.1 | أرضيات السيراميك |  | 3d | 2011-08-04 | 2011-08-07 | 507 | 15.88d | 0d |
| 513 | 1.11.9.2 | أرضيات البورسلين و الوزرات |  | 2d | 2011-08-04 | 2011-08-07 | 507 | 16.88d | 1d |
| 514 | 1.11.10 | **أعمال الجرانيت و الرخام** |  | 3d | 2011-08-04 | 2011-08-07 |  | 15.88d |  |
| 515 | 1.11.10.1 | تركيب الرخام |  | 3d | 2011-08-04 | 2011-08-07 | 507 | 15.88d | 0d |
| 516 | 1.11.11 | **أعمال الحديد و الألومنيوم** |  | 3d | 2011-08-08 | 2011-08-10 |  | 17.88d |  |
| 517 | 1.11.11.1 | تركيب أعمال الحديد و الألومنيوم |  | 3d | 2011-08-08 | 2011-08-10 | 512, 513, 515 | 17.88d | 2d |
| 518 | 1.11.12 | **أعمال الدهانات** |  | 3d | 2011-08-08 | 2011-08-10 |  | 15.88d |  |
| 519 | 1.11.12.1 | أعمال الدهان الداخلى |  | 3d | 2011-08-08 | 2011-08-10 | 515, 502, 512, 513 | 15.88d | 0d |
| 520 | 1.11.12.2 | أعمال الدهان الخارجى |  | 3d | 2011-08-08 | 2011-08-10 | 515, 505 | 17.88d | 2d |
| 521 | 1.11.13 | **تسليم المبنى** |  | 0d | 2011-08-13 | 2011-08-13 |  | 15.88d |  |
| 522 | 1.11.13.1 | تسليم المبنى | milestone | 0d | 2011-08-13 | 2011-08-13 | 517, 519, 520, 510, 494, 495, 496, 497, 499, 508 | 15.88d |  |

| ID | WBS | Task | Type | Duration | Start | Finish | Predecessors | Total slack | Free slack |
| --- | --- | --- | --- | --- | --- | --- | --- | --- | --- |
| 523 | 1.12 | **خزان الزيت** |  | 76d | 2011-03-29 | 2011-06-22 |  | 61.88d |  |
| 524 | 1.12.1 | **أعمال الإزالة** |  | 7d | 2011-03-29 | 2011-04-06 |  | 61.88d |  |
| 525 | 1.12.1.1 | أعمال الإزالة |  | 7d | 2011-03-29 | 2011-04-06 | 2FS+57d | 61.88d | 0d |
| 526 | 1.12.2 | **أعمال الحفر و الأساسات** |  | 33d | 2011-04-06 | 2011-05-14 |  | 61.88d |  |
| 527 | 1.12.2.1 | أعمال الحفر |  | 4d | 2011-04-06 | 2011-04-11 | 525 | 75.5d | 0d |
| 528 | 1.12.2.2 | اعمال الردم |  | 3d | 2011-05-10 | 2011-05-14 | 533 | 87.88d | 2d |
| 529 | 1.12.2.3 | الدمك على منسوب التأسيس |  | 2d | 2011-04-11 | 2011-04-13 | 527 | 61.88d | 0d |
| 530 | 1.12.2.4 | أعمال الخرسانة العادية للقواعد |  | 4d | 2011-04-13 | 2011-04-17 | 529 | 61.88d | 0d |
| 531 | 1.12.2.5 | أعمال الخرسانة المسلحة للقواعد |  | 9d | 2011-04-18 | 2011-04-27 | 530 | 75.5d | 0d |
| 532 | 1.12.2.6 | أعمال الخرسانة المسلحة للحوائط |  | 9d | 2011-04-27 | 2011-05-08 | 531 | 61.88d | 0d |
| 533 | 1.12.2.7 | أعمال العزل للقواعد و الحوائط |  | 2d | 2011-05-08 | 2011-05-10 | 532 | 61.88d | 0d |
| 534 | 1.12.3 | **أعمال الصرف** |  | 15d | 2011-05-10 | 2011-05-26 |  | 61.88d |  |
| 535 | 1.12.3.1 | أعمال الصرف |  | 15d | 2011-05-10 | 2011-05-26 | 532, 533 | 61.88d | 0d |
| 536 | 1.12.3.2 | بناء غرفة الترسيب الخارجية |  | 10d | 2011-05-16 | 2011-05-26 | 535SS+5d, 528 | 99.5d | 29d |
| 537 | 1.12.4 | **تركيب الخزان الحديد** |  | 12d | 2011-05-26 | 2011-06-09 |  | 61.88d |  |
| 538 | 1.12.4.1 | تركيب الخزان الحديد |  | 1d | 2011-05-26 | 2011-05-28 | 535 | 61.88d | 0d |
| 539 | 1.12.4.2 | توريد و تركيب السلالم الحديد |  | 3d | 2011-05-28 | 2011-05-31 | 538 | 73.88d | 0d |
| 540 | 1.12.4.3 | توريد وتركيب مواسيرالحماية |  | 3d | 2011-05-31 | 2011-06-04 | 539 | 87.5d | 0d |
| 541 | 1.12.4.4 | توريد و تركيب الزوايا الحديد |  | 3d | 2011-06-04 | 2011-06-07 | 540 | 73.88d | 0d |
| 542 | 1.12.4.5 | توريد و تركيب المظلة الحديد |  | 2d | 2011-06-07 | 2011-06-09 | 541 | 73.88d | 12d |
| 543 | 1.12.5 | **أعمال التبليطات و الأرضيات** |  | 23d | 2011-05-28 | 2011-06-22 |  | 61.88d |  |
| 544 | 1.12.5.1 | سيراميك الحوائط |  | 10d | 2011-05-28 | 2011-06-08 | 538 | 61.88d | 0d |
| 545 | 1.12.5.2 | سيراميك الأرضيات |  | 13d | 2011-06-08 | 2011-06-22 | 544 | 61.88d | 0d |
| 546 | 1.12.6 | **تسليم المبنى** |  | 0d | 2011-06-22 | 2011-06-22 |  | 61.88d |  |
| 547 | 1.12.6.1 | تسليم المبنى | milestone | 0d | 2011-06-22 | 2011-06-22 | 545, 542, 536 | 61.88d |  |

| ID | WBS | Task | Duration | Start | Finish | Predecessors | Total slack | Free slack |
| --- | --- | --- | --- | --- | --- | --- | --- | --- |
| 548 | 1.13 | **تجديد المبنى الإدارى القائم** | 68d | 2011-06-15 | 2011-08-31 |  | 0d |  |
| 549 | 1.13.1 | **أعمال التكسير و الفك** | 7d | 2011-06-15 | 2011-06-23 |  | 0d |  |
| 550 | 1.13.1.1 | أعمال التكسير و الفك | 7d | 2011-06-15 | 2011-06-23 | 285 | 0d |  |
| 551 | 1.13.2 | **أعمال الهيكل الإنشائى** | 52d | 2011-06-23 | 2011-08-21 |  | 0d |  |
| 552 | 1.13.2.1 | أعمال خرسانة أعمدة الدور الأول | 4d | 2011-06-23 | 2011-06-28 | 550 | 0d |  |
| 553 | 1.13.2.2 | أعمال خرسانة صب السلم الجديد | 5d | 2011-06-28 | 2011-07-04 | 552 | 0d |  |
| 554 | 1.13.2.3 | صب الدكة الخرسانية | 3d | 2011-07-04 | 2011-07-07 | 553 | 0d |  |
| 555 | 1.13.2.4 | صب السقف | 5d | 2011-07-07 | 2011-07-12 | 554, 552, 553 | 0d |  |
| 556 | 1.13.2.5 | دكة خرسانية للأسطح | 3d | 2011-07-28 | 2011-08-01 | 567 | 2d | 0d |
| 557 | 1.13.2.6 | خرسانة عادية لزوم الأرصفة | 4d | 2011-08-13 | 2011-08-17 | 587 | 9d | 0d |
| 558 | 1.13.2.7 | صب البردورة | 3d | 2011-08-17 | 2011-08-21 | 557 | 9d |  |
| 559 | 1.13.3 | **أعمال المبانى** | 4d | 2011-07-14 | 2011-07-19 |  | 0d |  |
| 560 | 1.13.3.1 | أعمال المبانى | 4d | 2011-07-14 | 2011-07-19 | 555FS+2d | 0d |  |
| 561 | 1.13.4 | **أعمال البياض و التكسية** | 10d | 2011-07-19 | 2011-07-31 |  | 0d |  |
| 562 | 1.13.4.1 | أعمال البياض الداخلى | 5d | 2011-07-19 | 2011-07-25 | 560 | 0d |  |
| 563 | 1.13.4.2 | أعمال البياض الخارجى | 5d | 2011-07-23 | 2011-07-28 | 560FS+3d | 23d | 16d |
| 564 | 1.13.4.3 | أعمال تركيب سيراميك الحوائط | 3d | 2011-07-27 | 2011-07-31 | 568 | 0d |  |
| 565 | 1.13.5 | **أعمال العزل** | 8d | 2011-07-19 | 2011-07-28 |  | 2d |  |
| 566 | 1.13.5.1 | أعمال عزل البيتومين للأسطح | 4d | 2011-07-19 | 2011-07-24 | 555, 560 | 2d | 0d |
| 567 | 1.13.5.2 | أعمال عزل الحرارة | 4d | 2011-07-24 | 2011-07-28 | 566 | 2d | 0d |
| 568 | 1.13.5.3 | عزل الحمامات | 2d | 2011-07-25 | 2011-07-27 | 562 | 0d |  |
| 569 | 1.13.6 | **أعمال الإلكترو ميكانيك** | 36d | 2011-07-19 | 2011-08-29 |  | 2d |  |
| 570 | 1.13.6.1 | **أعمال الكهرباء** | 35d | 2011-07-19 | 2011-08-28 |  | 3d |  |
| 571 | 1.13.6.1.1 | الإنارة | 26d | 2011-07-19 | 2011-08-17 | 562SS | 25.62d | 12d |
| 572 | 1.13.6.1.2 | القوى | 25d | 2011-07-25 | 2011-08-22 | 562 | 8d |  |
| 573 | 1.13.6.1.3 | أعمال مكافحة الحريق | 27d | 2011-07-25 | 2011-08-24 | 562 | 6d |  |
| 574 | 1.13.6.1.4 | التليفونات | 17d | 2011-07-25 | 2011-08-13 | 562 | 16d |  |
| 575 | 1.13.6.1.5 | كاميرات المراقبة | 6d | 2011-08-21 | 2011-08-28 | 591 | 3d |  |

| ID | WBS | Task | Type | Duration | Start | Finish | Predecessors | Total slack | Free slack |
| --- | --- | --- | --- | --- | --- | --- | --- | --- | --- |
| 576 | 1.13.6.2 | **أعمال الميكانيكا** |  | 36d | 2011-07-19 | 2011-08-29 |  | 2d |  |
| 577 | 1.13.6.2.1 | HVAC system |  | 36d | 2011-07-19 | 2011-08-29 | 560 | 2d |  |
| 578 | 1.13.6.2.2 | Fire Fighting |  | 30d | 2011-07-25 | 2011-08-28 | 562 | 3d |  |
| 579 | 1.13.7 | **أعمال التبليطات و الأرضيات** |  | 6d | 2011-07-31 | 2011-08-06 |  | 0d |  |
| 580 | 1.13.7.1 | أعمال تركيب أرضيات البورسلين |  | 3d | 2011-07-31 | 2011-08-03 | 564 | 0d |  |
| 581 | 1.13.7.2 | أعمال تركيب سيراميك أرضيات للحمامات |  | 3d | 2011-07-31 | 2011-08-03 | 580SS | 0d |  |
| 582 | 1.13.7.3 | أعمال تركيب الوزر |  | 3d | 2011-08-03 | 2011-08-06 | 581 | 0d |  |
| 583 | 1.13.7.4 | أعمال تركيب سيراميك الأسطح و الوزر |  | 3d | 2011-08-01 | 2011-08-04 | 556 | 2d |  |
| 584 | 1.13.8 | **أعمال الجرانيت و الرخام** |  | 6d | 2011-08-03 | 2011-08-09 |  | 0d |  |
| 585 | 1.13.8.1 | أعمال تركيب الرخام |  | 6d | 2011-08-03 | 2011-08-09 | 582SS, 583SS | 0d |  |
| 586 | 1.13.9 | **أعمال النجارة** |  | 3d | 2011-08-09 | 2011-08-13 |  | 2d |  |
| 587 | 1.13.9.1 | أعمال تركيب النجارة |  | 3d | 2011-08-09 | 2011-08-13 | 585 | 2d | 0d |
| 588 | 1.13.10 | **أعمال الحديد و الألومنيوم** |  | 5d | 2011-08-09 | 2011-08-15 |  | 0d |  |
| 589 | 1.13.10.1 | أعمال تركيب الحديد و الألومنيوم |  | 5d | 2011-08-09 | 2011-08-15 | 585 | 0d |  |
| 590 | 1.13.11 | **أعمال الدهانات** |  | 7d | 2011-08-15 | 2011-08-23 |  | 0d |  |
| 591 | 1.13.11.1 | أعمال الدهان الداخلى |  | 5d | 2011-08-15 | 2011-08-21 | 582, 587, 589, 562 | 0d |  |
| 592 | 1.13.11.2 | أعمال الدهان الخارجى |  | 7d | 2011-08-15 | 2011-08-23 | 582, 587, 589, 563 | 7d |  |
| 593 | 1.13.12 | **أعمال السقف المعلق** |  | 12d | 2011-08-17 | 2011-08-31 |  | 0d |  |
| 594 | 1.13.12.1 | أعمال السقف المعلق |  | 12d | 2011-08-17 | 2011-08-31 | 591SS+2d | 0d |  |
| 595 | 1.13.13 | **تسليم المبنى** |  | 0d | 2011-08-31 | 2011-08-31 |  | 0d |  |
| 596 | 1.13.13.1 | تسليم المبنى | milestone | 0d | 2011-08-31 | 2011-08-31 | 591, 558, 594, 577, 578, 572, 571, 573, 574, 575, 592 | 0d |  |
| 597 | 1.14 | نهاية المشروع | milestone | 0d | 2011-08-31 | 2011-08-31 | 596, 472, 330, 393, 434, 547, 222, 193, 522, 114SS+53d, 333, 334, 335, 336, 339, 338, 154, 345, 346, 347, 348, 349, 341 | 0d |  |
