# Dabour Project / 10th of Ramdan

Schedule from MS Project, 2010-12-26 to 2011-07-05, status date 2011-01-25, costs in $, A marks actual dates.
NONE

## Calendars

- Standard: Mon-Thu 08:00-16:00; Fri off; Sat-Sun 08:00-16:00.

## Resources

| Resource |
| --- |
| Carpenter |
| Excavator |
| Labour |
| Louder |
| Mason |
| Steel Fixer |

## Schedule

| ID | WBS | Task | Type | Duration | Start | Finish | Predecessors | Complete | Remaining | Baseline start | Baseline finish | Baseline duration | Total slack | Free slack | Resources | Work | Actual work | Cost | Baseline cost |
| --- | --- | --- | --- | --- | --- | --- | --- | --- | --- | --- | --- | --- | --- | --- | --- | --- | --- | --- | --- |
| 1 | 1 | **Dabur Green Field project** |  | 165d | 2010-12-26 A | 2011-07-05 |  | 13% | 144.29d | 2010-12-26 | 2011-06-26 | 157d | 0d |  |  | 44505.8h | 446.6h | 18,000,000.1 | 18,000,000.1 |
| 2 | 1.1 | **Key Dates** |  | 165d | 2010-12-26 A | 2011-07-05 |  | 13% | 144.29d | 2010-12-26 | 2011-06-26 | 157d | 0d |  |  | 44505.8h | 446.6h | 18,000,000.1 | 18,000,000.1 |
| 3 | 1 | Project Start and Contract agreement | milestone | 0d | 2010-12-26 | 2010-12-26 |  |  |  | 2010-12-26 | 2010-12-26 | 0d | 35d | 0d |  |  |  |  |  |
| 4 | 1 | Project Completion Date | milestone | 0d | 2011-07-05 | 2011-07-05 | 197, 213, 229, 62, 76, 262, 253, 244, 235, 128, 162, 180 |  |  | 2011-06-26 | 2011-06-26 | 0d | 0d |  |  |  |  |  |  |
| 5 | 2 | **Moblization and Site work** |  | 14d | 2010-12-26 A | 2011-01-10 A |  | 100% |  | 2010-12-26 | 2011-01-10 | 14d |  |  |  |  |  | 12,810 | 12,810 |
| 6 | 2 | Moblization & Site Work (Cleaning & Removal ) |  | 14d | 2010-12-26 A | 2011-01-10 A | 3 | 100% |  | 2010-12-26 | 2011-01-10 | 14d |  |  |  |  |  | 12,810 | 12,810 |
| 7 | 8 | **Shop Drawing** |  | 42d | 2010-12-26 A | 2011-02-12 |  | 47% | 22.4d | 2010-12-26 | 2011-02-12 | 42d | 81d |  |  |  |  |  |  |
| 8 | 8.1 | **Submittal** |  | 37d | 2010-12-26 A | 2011-02-06 |  | 51% | 17.97d | 2010-12-26 | 2011-02-06 | 37d | 81d |  |  |  |  |  |  |
| 9 | 8.1.1 | **Production & Administration Building** |  | 31d | 2010-12-26 A | 2011-01-30 A |  | 100% |  | 2010-12-26 | 2011-01-20 | 23d |  |  |  |  |  |  |  |
| 10 | 8.1.1 | Soil Replacement |  | 31d | 2010-12-26 A | 2011-01-30 A | 3 | 100% |  | 2010-12-26 | 2010-12-30 | 5d |  |  |  |  |  |  |  |
| 11 | 8.1.1 | Plain Concrete |  | 10d | 2010-12-28 A | 2011-01-08 A | 10SS+2d | 100% |  | 2010-12-28 | 2011-01-04 | 7d |  |  |  |  |  |  |  |
| 12 | 8.1.1 | Reinforced Concrete |  | 13d | 2011-01-08 A | 2011-01-22 A | 11 | 100% |  | 2011-01-05 | 2011-01-20 | 14d |  |  |  |  |  |  |  |
| 13 | 8.1.2 | **Utilities Building (N:1) (Water Tanks + Boiler + Pump Room)** |  | 6d | 2011-01-11 | 2011-01-17 |  |  |  | 2011-01-11 | 2011-01-17 | 6d | 37d |  |  |  |  |  |  |
| 14 | 8.1.2 | Plain Concrete |  | 6d | 2011-01-11 | 2011-01-17 | 6 |  |  | 2011-01-11 | 2011-01-17 | 6d | 37d | 0d |  |  |  |  |  |
| 15 | 8.1.2 | Reinforced Concrete | milestone | 0d | 2011-01-13 | 2011-01-13 | 14SS+3d |  |  | 2011-01-13 | 2011-01-13 | 0d | 48d | 0d | Carpenter |  |  |  |  |
| 16 | 8.1.3 | **Utilities Building (N:2) (Electrical Room)** |  | 11d | 2011-01-18 | 2011-01-30 |  |  |  | 2011-01-18 | 2011-01-30 | 11d | 80d |  |  |  |  |  |  |
| 17 | 8.1.3 | Plain Concrete |  | 6d | 2011-01-18 | 2011-01-24 | 14 |  |  | 2011-01-18 | 2011-01-24 | 6d | 80d | 0d |  |  |  |  |  |
| 18 | 8.1.3 | Reinforced Concrete |  | 8d | 2011-01-22 | 2011-01-30 | 17SS+3d |  |  | 2011-01-22 | 2011-01-30 | 8d | 80d | 0d |  |  |  |  |  |
| 19 | 8.1.4 | **Security Rooms** |  | 11d | 2011-01-25 | 2011-02-06 |  |  |  | 2011-01-25 | 2011-02-06 | 11d | 81d |  |  |  |  |  |  |
| 20 | 8.1.4 | Plain Concrete |  | 6d | 2011-01-25 | 2011-01-31 | 17 |  |  | 2011-01-25 | 2011-01-31 | 6d | 81d | 0d |  |  |  |  |  |
| 21 | 8.1.4 | Reinforced Concrete |  | 8d | 2011-01-29 | 2011-02-06 | 20SS+3d |  |  | 2011-01-29 | 2011-02-06 | 8d | 81d | 0d |  |  |  |  |  |
| 22 | 8.1.5 | **External Fence** |  | 13d | 2010-12-26 | 2011-01-09 |  |  |  | 2010-12-26 | 2011-01-09 | 13d | 35d |  |  |  |  |  |  |
| 23 | 8.1.5 | Plain Concrete |  | 7d | 2010-12-26 | 2011-01-02 | 3 |  |  | 2010-12-26 | 2011-01-02 | 7d | 35d | 0d |  |  |  |  |  |
| 24 | 8.1.5 | Reinforced Concrete |  | 10d | 2010-12-29 | 2011-01-09 | 23SS+3d |  |  | 2010-12-29 | 2011-01-09 | 10d | 49d | 0d |  |  |  |  |  |

| ID | WBS | Task | Type | Duration | Start | Finish | Predecessors | Complete | Remaining | Baseline start | Baseline finish | Baseline duration | Total slack | Free slack | Resources | Work | Actual work | Cost | Baseline cost |
| --- | --- | --- | --- | --- | --- | --- | --- | --- | --- | --- | --- | --- | --- | --- | --- | --- | --- | --- | --- |
| 25 | 8.6 | **Approval** |  | 37d | 2011-01-01 A | 2011-02-12 |  | 40% | 22.2d | 2011-01-01 | 2011-02-12 | 37d | 81d |  |  |  |  |  |  |
| 26 | 8.6.1 | **Production & Administration Building** |  | 28d | 2011-01-01 A | 2011-02-01 |  | 86% | 4d | 2011-01-01 | 2011-01-26 | 23d | 18d |  |  |  |  |  |  |
| 27 | 8.6.1 | Soil Replacement |  | 21d | 2011-01-01 A | 2011-01-24 A | 10 | 100% |  | 2011-01-01 | 2011-01-05 | 5d |  |  |  |  |  |  |  |
| 28 | 8.6.1 | Plain Concrete |  | 9d | 2011-01-09 A | 2011-01-18 A | 27SS+5d, 11 | 100% |  | 2011-01-06 | 2011-01-09 | 3d |  |  |  |  |  |  |  |
| 29 | 8.6.1 | Reinforced Concrete |  | 5d | 2011-01-27 | 2011-02-01 | 28FS+7d, 12 |  |  | 2011-01-22 | 2011-01-26 | 5d | 18d | 0d |  |  |  |  |  |
| 30 | 8.6.2 | **Utilities Building (N:1) (Water Tanks + Boiler + Pump Room)** |  | 8d | 2011-01-15 | 2011-01-23 |  |  |  | 2011-01-15 | 2011-01-23 | 8d | 40d |  |  |  |  |  |  |
| 31 | 8.6.2 | Plain Concrete |  | 5d | 2011-01-18 | 2011-01-23 | 14 |  |  | 2011-01-18 | 2011-01-23 | 5d | 37d | 0d |  |  |  |  |  |
| 32 | 8.6.2 | Reinforced Concrete |  | 5d | 2011-01-15 | 2011-01-19 | 15 |  |  | 2011-01-15 | 2011-01-19 | 5d | 48d | 11d |  |  |  |  |  |
| 33 | 8.6.3 | **Utilities Building (N:2) (Electrical Room)** |  | 10d | 2011-01-25 | 2011-02-05 |  |  |  | 2011-01-25 | 2011-02-05 | 10d | 80d |  |  |  |  |  |  |
| 34 | 8.6.3 | Plain Concrete |  | 5d | 2011-01-25 | 2011-01-30 | 17 |  |  | 2011-01-25 | 2011-01-30 | 5d | 81d | 2d |  |  |  |  |  |
| 35 | 8.6.3 | Reinforced Concrete |  | 5d | 2011-01-31 | 2011-02-05 | 34SS+3d, 18 |  |  | 2011-01-31 | 2011-02-05 | 5d | 80d | 1d |  |  |  |  |  |
| 36 | 8.6.4 | **Security Rooms** |  | 10d | 2011-02-01 | 2011-02-12 |  |  |  | 2011-02-01 | 2011-02-12 | 10d | 81d |  |  |  |  |  |  |
| 37 | 8.6.4 | Plain Concrete |  | 5d | 2011-02-01 | 2011-02-06 | 20 |  |  | 2011-02-01 | 2011-02-06 | 5d | 82d | 2d |  |  |  |  |  |
| 38 | 8.6.4 | Reinforced Concrete |  | 5d | 2011-02-07 | 2011-02-12 | 37SS+3d, 21 |  |  | 2011-02-07 | 2011-02-12 | 5d | 81d | 72d |  |  |  |  |  |
| 39 | 8.6.5 | **External Fence** |  | 11d | 2011-01-03 | 2011-01-15 |  |  |  | 2011-01-03 | 2011-01-15 | 11d | 35d |  |  |  |  |  |  |
| 40 | 8.6.5 | Plain Concrete |  | 5d | 2011-01-03 | 2011-01-08 | 23 |  |  | 2011-01-03 | 2011-01-08 | 5d | 35d | 3d |  |  |  |  |  |
| 41 | 8.6.5 | Reinforced Concrete |  | 5d | 2011-01-10 | 2011-01-15 | 40SS+3d, 24 |  |  | 2011-01-10 | 2011-01-15 | 5d | 49d | 23d |  |  |  |  |  |
| 42 | 3 | **Production & Administration Building** |  | 163d | 2010-12-28 A | 2011-07-05 |  | 16% | 137.64d | 2010-12-28 | 2011-06-26 | 155d | 0d |  |  | 32529h | 446.6h | 16,759,112.1 | 16,759,112.1 |
| 43 | 3.5 | **stage 1 (Adm1:4, Adm A: Adm N)** |  | 163d | 2010-12-28 A | 2011-07-05 |  | 22% | 126.97d | 2010-12-28 | 2011-06-26 | 155d | 0d |  |  | 8276.8h | 190.4h | 3,801,077 | 3,801,077 |
| 44 | 3.5.1 | **Foundation** |  | 88d | 2010-12-28 A | 2011-04-09 |  | 64% | 32.08d | 2010-12-28 | 2011-04-03 | 83d | 51d |  |  | 884.8h | 190.4h | 770,501 | 770,501 |
| 45 | 3.5.1 | Excavation [FN] |  | 29d | 2010-12-28 A | 2011-01-30 A | 6SS+2d | 100% |  | 2010-12-28 | 2010-12-30 | 3d |  |  | Excavator [70%] | 162.4h | 162.4h | 17,906 | 17,906 |
| 46 | 3.5.1 | Plain Concrete [FN] |  | 5d | 2011-01-12 A | 2011-01-24 | 53, 28 | 95% | 0.25d | 2011-01-12 | 2011-01-17 | 5d | 25d | 7d | Carpenter [126%]; Labour [84%] | 84h |  | 64,135 | 64,135 |
| 47 | 3.5.1 | Reinforced Concrete for Foundation ( Tie & Ground Beams &Columns neck) [FN] |  | 6d | 2011-02-02 | 2011-02-08 | 46, 29 |  |  | 2011-01-27 | 2011-02-02 | 6d | 18d | 0d | Carpenter [280%]; Steel Fixer [280%]; Labour [70%] | 302.4h |  | 486,380 | 486,380 |
| 48 | 3.5.1 | Water Proofing For Slab On Grade [FN] |  | 3d | 2011-03-31 | 2011-04-03 | 54 |  |  | 2011-03-26 | 2011-03-28 | 3d | 51d | 0d | Labour [70%] | 16.8h |  | 29,013 | 29,013 |
| 49 | 3.5.1 | Compacted Backfilling [FN] |  | 3d | 2011-03-23 | 2011-03-26 | 50 |  |  | 2011-03-17 | 2011-03-20 | 3d | 51d | 0d | Louder [140%] | 33.6h |  | 11,472 | 11,472 |
| 50 | 3.5.1 | Water Proofing For Foundation [FN] |  | 5d | 2011-03-17 | 2011-03-22 | 59FS+7d |  |  | 2011-03-12 | 2011-03-16 | 5d | 51d | 0d | Louder [84%] | 33.6h |  | 13,600 | 13,600 |
| 51 | 3.5.1 | Reinforced Concrete for Slab On Grade [FN] |  | 5d | 2011-04-04 | 2011-04-09 | 48 |  |  | 2011-03-29 | 2011-04-03 | 5d | 51d | 0d | Steel Fixer [140%]; Carpenter [140%]; Labour [70%] | 140h |  |  |  |
| 52 | 3.5.1 | Removal [FN] |  | 10d | 2010-12-28 A | 2011-01-08 A | 45SS | 100% |  | 2010-12-28 | 2011-01-08 | 10d |  |  | Louder [35%] | 28h | 28h | 27,610 | 27,610 |
| 53 | 3.5.1 | Soil Replacement [FN] | milestone | 0d | 2011-01-06 A | 2011-01-11 A | 55, 27 | 100% |  | 2011-01-06 | 2011-01-11 | 5d |  |  | Labour [140%] |  |  | 65,340 | 65,340 |
| 54 | 3.5.1 | Blinding P.C [FN] |  | 4d | 2011-03-27 | 2011-03-30 | 49 |  |  | 2011-03-21 | 2011-03-24 | 4d | 51d | 0d | Carpenter [157.5%]; Labour [105%] | 84h |  | 55,045 | 55,045 |
| 55 | 3.5.1 | Submerse Exacavation level [FN] |  | 2d | 2011-01-01 A | 2011-01-02 A | 45 | 100% |  | 2011-01-01 | 2011-01-02 | 2d |  |  |  |  |  |  |  |

| ID | WBS | Task | Type | Duration | Start | Finish | Predecessors | Complete | Remaining | Baseline start | Baseline finish | Baseline duration | Total slack | Free slack | Constraint | Resources | Work | Actual work | Cost | Baseline cost |
| --- | --- | --- | --- | --- | --- | --- | --- | --- | --- | --- | --- | --- | --- | --- | --- | --- | --- | --- | --- | --- |
| 56 | 3.5.7 | **Ground Floor** |  | 63d | 2011-02-09 | 2011-04-23 |  |  |  | 2011-02-03 | 2011-04-17 | 63d | 18d |  |  |  | 2968h |  | 1,016,530 | 1,016,530 |
| 57 | 3.5.7.2 | **Structural** |  | 34d | 2011-02-09 | 2011-03-20 |  |  |  | 2011-02-03 | 2011-03-14 | 34d | 18d |  |  |  | 2128h |  | 874,882 | 874,882 |
| 58 | 3.5.7.2 | Columns [GR] |  | 8d | 2011-02-09 | 2011-02-17 | 47 |  |  | 2011-02-03 | 2011-02-12 | 8d | 18d | 0d |  | Steel Fixer [350%]; Carpenter [525%]; Labour [350%] | 784h |  | 69,800 | 69,800 |
| 59 | 3.5.7.2 | Slab and beams [GR] |  | 15d | 2011-02-20 | 2011-03-08 | 58FS+1d |  |  | 2011-02-14 | 2011-03-02 | 15d | 18d | 0d |  | Steel Fixer [560%]; Carpenter [560%] | 1344h |  | 805,082 | 805,082 |
| 60 | 1.1.5.1.2.1.3 | shuttering removal |  | 10d | 2011-03-09 | 2011-03-20 | 59 |  |  | 2011-03-03 | 2011-03-14 | 10d | 68d | 17d | start no earlier than 2011-03-02 |  |  |  |  |  |
| 61 | 3.5.7.3 | **Architectural** |  | 12d | 2011-04-10 | 2011-04-23 |  |  |  | 2011-04-04 | 2011-04-17 | 12d | 51d |  |  |  | 840h |  | 141,648 | 141,648 |
| 62 | 3.5.7.3 | Masonry [GR] |  | 12d | 2011-04-10 | 2011-04-23 | 59, 51, 60 |  |  | 2011-04-04 | 2011-04-17 | 12d | 51d | 7d |  | Mason [583.3%]; Labour [291.7%] | 840h |  | 141,648 | 141,648 |
| 63 | 3.5.2 | **1st Floor Floor** |  | 51d | 2011-03-17 | 2011-05-15 |  |  |  | 2011-03-12 | 2011-05-09 | 51d | 18d |  |  |  | 2968h |  | 1,004,323 | 1,004,323 |
| 64 | 3.5.2.2 | **Structural** |  | 39d | 2011-03-17 | 2011-05-01 |  |  |  | 2011-03-12 | 2011-04-25 | 39d | 18d |  |  |  | 2128h |  | 862,675 | 862,675 |
| 65 | 3.5.2.2 | Columns [1st ] |  | 10d | 2011-03-17 | 2011-03-28 | 59FS+7d |  |  | 2011-03-12 | 2011-03-22 | 10d | 18d | 0d |  | Steel Fixer [280%]; Carpenter [420%]; Labour [280%] | 784h |  | 61,075 | 61,075 |
| 66 | 3.5.2.2 | Slab and beams [1st] |  | 18d | 2011-03-30 | 2011-04-19 | 65FS+1d |  |  | 2011-03-24 | 2011-04-13 | 18d | 18d | 0d |  | Steel Fixer [466.7%]; Carpenter [466.7%] | 1344h |  | 801,600 | 801,600 |
| 67 | 1.1.5.1.3.1.3 | shuttering removal |  | 10d | 2011-04-20 | 2011-05-01 | 66 |  |  | 2011-04-14 | 2011-04-25 | 10d | 44d | 0d |  |  |  |  |  |  |
| 68 | 3.5.2.3 | **Architectural** |  | 12d | 2011-05-02 | 2011-05-15 |  |  |  | 2011-04-26 | 2011-05-09 | 12d | 44d |  |  |  | 840h |  | 141,648 | 141,648 |
| 69 | 3.5.2.3 | Masonry [1st] |  | 12d | 2011-05-02 | 2011-05-15 | 66, 62, 67 |  |  | 2011-04-26 | 2011-05-09 | 12d | 44d |  |  | Mason [583.3%]; Labour [291.7%] | 840h |  | 141,648 | 141,648 |
| 70 | 3.5.3 | **2nd Floor Floor** |  | 59d | 2011-04-28 | 2011-07-05 |  |  |  | 2011-04-23 | 2011-06-26 | 56d | 0d |  |  |  | 1456h |  | 1,009,723 | 1,009,723 |
| 71 | 3.5.3.2 | **Structural** |  | 59d | 2011-04-28 | 2011-07-05 |  |  |  | 2011-04-23 | 2011-06-26 | 56d | 0d |  |  |  | 1456h |  | 868,075 | 868,075 |
| 72 | 3.5.3.2 | Columns [2nd] |  | 12d | 2011-04-28 | 2011-05-11 | 66FS+7d |  |  | 2011-04-23 | 2011-05-05 | 12d | 18d |  |  | Steel Fixer [233.3%]; Carpenter [350%]; Labour [233.3%] | 784h |  | 61,075 | 61,075 |
| 73 | 3.5.3.2 | Slab and beams [2nd] |  | 21d | 2011-06-04 | 2011-06-28 | 72FS+1d |  |  | 2011-05-25 | 2011-06-19 | 21d | 0d |  | as late as possible | Steel Fixer; Carpenter [400%] | 672h |  | 807,000 | 807,000 |
| 74 | 1.1.5.1.4.1.3 | shuttering removal |  | 7d | 2011-06-28 | 2011-07-05 | 73 |  |  | 2011-06-19 | 2011-06-26 | 7d | 0d |  |  |  |  |  |  |  |
| 75 | 3.5.3.3 | **Architectural** |  | 0d | 2011-07-05 | 2011-07-05 |  |  |  | 2011-06-26 | 2011-06-26 | 0d | 0d |  |  |  |  |  | 141,648 | 141,648 |
| 76 | 3.5.3.3 | Masonry [2nd] | milestone | 0d | 2011-07-05 | 2011-07-05 | 73, 69, 74 |  |  | 2011-06-26 | 2011-06-26 | 0d | 0d |  |  | Mason; Labour |  |  | 141,648 | 141,648 |
| 77 | 3.1 | **stage 2 (Pro 1 : Pro16 , Pro G: Pro: H)** |  | 80d | 2011-01-10 A | 2011-04-12 |  | 30% | 56d | 2011-01-10 | 2011-04-11 | 79d | 8d |  |  |  | 2441.6h | 123.2h | 1,510,657 | 1,510,657 |
| 78 | 3.1.1 | **Foundation** |  | 70d | 2011-01-10 A | 2011-03-31 |  | 44% | 39.45d | 2011-01-10 | 2011-03-30 | 69d | 8d |  |  |  | 817.6h | 123.2h | 1,171,824 | 1,171,824 |
| 79 | 3.1.1 | Excavation [FN] |  | 6d | 2011-01-10 A | 2011-01-16 A | 97, 131, 165 | 100% |  | 2011-01-10 | 2011-01-16 | 6d |  |  |  | Excavator [58.3%] | 28h | 28h | 37,954 | 37,954 |
| 80 | 3.1.1 | Plain Concrete [FN] |  | 5d | 2011-01-26 | 2011-01-31 | 87 |  |  | 2011-01-25 | 2011-01-30 | 5d | 8d | 0d |  | Carpenter [126%]; Labour [84%] | 84h |  | 34,592 | 34,592 |
| 81 | 3.1.1 | Reinforced Concrete for Foundation ( Tie & Ground Beams &Columns neck) [FN] |  | 6d | 2011-02-01 | 2011-02-07 | 80 |  |  | 2011-01-31 | 2011-02-06 | 6d | 8d | 0d |  | Carpenter [280%]; Steel Fixer [280%]; Labour [70%] | 302.4h |  | 257,840 | 257,840 |
| 82 | 3.1.1 | Water Proofing For Slab On Grade [FN] |  | 3d | 2011-03-23 | 2011-03-26 | 88 |  |  | 2011-03-22 | 2011-03-24 | 3d | 8d | 0d |  | Labour [70%] | 16.8h |  | 29,013 | 29,013 |
| 83 | 3.1.1 | Compacted Backfilling [FN] |  | 3d | 2011-03-15 | 2011-03-17 | 84 |  |  | 2011-03-14 | 2011-03-16 | 3d | 8d | 0d |  | Louder [140%] | 33.6h |  | 24,320 | 24,320 |
| 84 | 3.1.1 | Water Proofing For Foundation [FN] |  | 5d | 2011-03-09 | 2011-03-14 | 92FS+10d |  |  | 2011-03-08 | 2011-03-13 | 5d | 8d | 0d |  | Louder [84%] | 33.6h |  | 13,600 | 13,600 |
| 85 | 3.1.1 | Reinforced Concrete for Slab On Grade [FN] |  | 5d | 2011-03-27 | 2011-03-31 | 82 |  |  | 2011-03-26 | 2011-03-30 | 5d | 8d | 0d |  | Steel Fixer [140%]; Carpenter [140%]; Labour [70%] | 140h |  | 438,840 | 438,840 |
| 86 | 3.1.1 | Removal [FN] |  | 10d | 2011-01-10 A | 2011-01-20 A | 79SS, 52 | 100% |  | 2011-01-10 | 2011-01-20 | 10d |  |  |  | Louder [35%] | 28h | 28h | 58,520 | 58,520 |
| 87 | 3.1.1 | Soil Replacement [FN] |  | 6d | 2011-01-19 A | 2011-01-25 A | 89 | 100% |  | 2011-01-19 | 2011-01-24 | 5d |  |  |  | Labour [140%] | 67.2h | 67.2h | 138,270 | 138,270 |
| 88 | 3.1.1 | Blinding P.C [FN] |  | 4d | 2011-03-19 | 2011-03-22 | 83 |  |  | 2011-03-17 | 2011-03-21 | 4d | 8d | 0d |  | Carpenter [157.5%]; Labour [105%] | 84h |  | 138,875 | 138,875 |
| 89 | 3.1.1 | Submerse Exacavation level [FN] |  | 2d | 2011-01-17 A | 2011-01-18 A | 79 | 100% |  | 2011-01-17 | 2011-01-18 | 2d |  |  |  |  |  |  |  |  |

| ID | WBS | Task | Duration | Start | Finish | Predecessors | Complete | Remaining | Baseline start | Baseline finish | Baseline duration | Total slack | Free slack | Resources | Work | Actual work | Cost | Baseline cost |
| --- | --- | --- | --- | --- | --- | --- | --- | --- | --- | --- | --- | --- | --- | --- | --- | --- | --- | --- |
| 90 | 3.1.7 | **Ground Floor** | 55d | 2011-02-08 | 2011-04-12 |  |  |  | 2011-02-07 | 2011-04-11 | 55d | 8d |  |  | 1624h |  | 338,833 | 338,833 |
| 91 | 3.1.7.2 | **Structural** | 15d | 2011-02-08 | 2011-02-24 |  |  |  | 2011-02-07 | 2011-02-23 | 15d | 8d |  |  | 784h |  | 197,185 | 197,185 |
| 92 | 3.1.7.2 | Columns [GR] | 15d | 2011-02-08 | 2011-02-24 | 81 |  |  | 2011-02-07 | 2011-02-23 | 15d | 8d | 0d | Steel Fixer [186.7%]; Carpenter [280%]; Labour [186.7%] | 784h |  | 197,185 | 197,185 |
| 93 | 3.1.7.3 | **Architectural** | 10d | 2011-04-02 | 2011-04-12 |  |  |  | 2011-03-31 | 2011-04-11 | 10d | 8d |  |  | 840h |  | 141,648 | 141,648 |
| 94 | 3.1.7.3 | Masonry [GR] | 10d | 2011-04-02 | 2011-04-12 | 85, 92FS+1d |  |  | 2011-03-31 | 2011-04-11 | 10d | 8d | 0d | Mason [700%]; Labour [350%] | 840h |  | 141,648 | 141,648 |
| 95 | 3.2 | **stage 3 (Pro 11 : Pro16 , Pro B: Pro G)** | 141d | 2011-01-01 A | 2011-06-13 |  | 10% | 126.67d | 2011-01-01 | 2011-06-01 | 131d | 19d |  |  | 9697.8h | 49h | 4,920,825.4 | 4,920,825.4 |
| 96 | 3.2.1 | **Foundation** | 79d | 2011-01-01 A | 2011-04-02 |  | 36% | 50.68d | 2011-01-01 | 2011-03-21 | 69d | 45d |  |  | 793.8h | 49h | 1,468,322 | 1,468,322 |
| 97 | 3.2.1 | Excavation [FN] | 6d | 2011-01-01 A | 2011-01-06 A | 45 | 100% |  | 2011-01-01 | 2011-01-06 | 6d |  |  | Excavator [43.8%] | 21h | 21h | 20,244 | 20,244 |
| 98 | 3.2.1 | Plain Concrete [FN] | 5d | 2011-01-27 | 2011-02-01 | 105 |  |  | 2011-01-16 | 2011-01-20 | 5d | 19d | 0d | Carpenter [126%]; Labour [84%] | 84h |  | 111,100 | 111,100 |
| 99 | 3.2.1 | Reinforced Concrete for Foundation ( Tie & Ground Beams &Columns neck) [FN] | 6d | 2011-02-02 | 2011-02-08 | 98 |  |  | 2011-01-22 | 2011-01-27 | 6d | 19d | 0d | Carpenter [280%]; Steel Fixer [280%]; Labour [70%] | 302.4h |  | 837,980 | 837,980 |
| 100 | 3.2.1 | Water Proofing For Slab On Grade [FN] | 2d | 2011-03-26 | 2011-03-27 | 106 |  |  | 2011-03-14 | 2011-03-15 | 2d | 45d | 0d | Labour [70%] | 11.2h |  | 29,013 | 29,013 |
| 101 | 3.2.1 | Compacted Backfilling [FN] | 3d | 2011-03-17 | 2011-03-20 | 102 |  |  | 2011-03-06 | 2011-03-08 | 3d | 45d | 0d | Louder [140%] | 33.6h |  | 12,976 | 12,976 |
| 102 | 3.2.1 | Water Proofing For Foundation [FN] | 5d | 2011-03-12 | 2011-03-16 | 111FS+7d |  |  | 2011-02-28 | 2011-03-05 | 5d | 45d | 0d | Louder [84%] | 33.6h |  | 13,600 | 13,600 |
| 103 | 3.2.1 | Reinforced Concrete for Slab On Grade [FN] | 5d | 2011-03-28 | 2011-04-02 | 100 |  |  | 2011-03-16 | 2011-03-21 | 5d | 45d | 0d | Steel Fixer [140%]; Carpenter [140%]; Labour [70%] | 140h |  | 265,050 | 265,050 |
| 104 | 3.2.1 | Removal [FN] | 10d | 2011-01-02 A | 2011-01-12 A | 97SS, 86SS-7d | 100% |  | 2011-01-02 | 2011-01-12 | 10d |  |  | Louder [35%] | 28h | 28h | 31,214 | 31,214 |
| 105 | 3.2.1 | Soil Replacement [FN] | 5d | 2011-01-22 A | 2011-01-26 | 107 | 20% | 4d | 2011-01-10 | 2011-01-15 | 5d | 19d | 0d | Labour [140%] | 56h |  | 73,920 | 73,920 |
| 106 | 3.2.1 | Blinding P.C [FN] | 4d | 2011-03-21 | 2011-03-24 | 101 |  |  | 2011-03-09 | 2011-03-13 | 4d | 45d | 0d | Carpenter [157.5%]; Labour [105%] | 84h |  | 73,225 | 73,225 |
| 107 | 3.2.1 | Submerse Exacavation level [FN] | 2d | 2011-01-08 A | 2011-01-09 A | 97 | 100% |  | 2011-01-08 | 2011-01-09 | 2d |  |  |  |  |  |  |  |
| 108 | 3.2.7 | **Ground Floor** | 57d | 2011-02-09 | 2011-04-16 |  |  |  | 2011-01-29 | 2011-04-04 | 57d | 19d |  |  | 2968h |  | 1,157,694.16 | 1,157,694.16 |
| 109 | 3.2.7.2 | **Structural** | 29d | 2011-02-09 | 2011-03-14 |  |  |  | 2011-01-29 | 2011-03-02 | 29d | 19d |  |  | 2128h |  | 1,016,046.43 | 1,016,046.43 |
| 110 | 3.2.7.2 | Columns [GR] | 8d | 2011-02-09 | 2011-02-17 | 99 |  |  | 2011-01-29 | 2011-02-06 | 8d | 19d | 0d | Steel Fixer [350%]; Carpenter [525%]; Labour [350%] | 784h |  | 209,400 | 209,400 |
| 111 | 3.2.7.2 | Slab and beams [GR] | 10d | 2011-02-20 | 2011-03-02 | 110FS+1d |  |  | 2011-02-08 | 2011-02-19 | 10d | 19d | 0d | Steel Fixer [840%]; Carpenter [840%] | 1344h |  | 806,646.43 | 806,646.43 |
| 112 | 1.1.5.3.2.1.3 | shuttering removal | 10d | 2011-03-03 | 2011-03-14 | 111 |  |  | 2011-02-20 | 2011-03-02 | 10d | 61d | 16d |  |  |  |  |  |
| 113 | 3.2.7.3 | **Architectural** | 12d | 2011-04-03 | 2011-04-16 |  |  |  | 2011-03-22 | 2011-04-04 | 12d | 45d |  |  | 840h |  | 141,647.73 | 141,647.73 |
| 114 | 3.2.7.3 | Masonry [GR] | 12d | 2011-04-03 | 2011-04-16 | 111, 103, 112 |  |  | 2011-03-22 | 2011-04-04 | 12d | 45d | 3d | Mason [583.3%]; Labour [291.7%] | 840h |  | 141,647.73 | 141,647.73 |

| ID | WBS | Task | Type | Duration | Start | Finish | Predecessors | Complete | Remaining | Baseline start | Baseline finish | Baseline duration | Total slack | Free slack | Resources | Work | Actual work | Cost | Baseline cost |
| --- | --- | --- | --- | --- | --- | --- | --- | --- | --- | --- | --- | --- | --- | --- | --- | --- | --- | --- | --- |
| 115 | 3.2.2 | **1st Floor Floor** |  | 46d | 2011-03-12 | 2011-05-03 |  |  |  | 2011-02-28 | 2011-04-21 | 46d | 19d |  |  | 2968h |  | 1,147,404.62 | 1,147,404.62 |
| 116 | 3.2.2.2 | **Structural** |  | 34d | 2011-03-12 | 2011-04-19 |  |  |  | 2011-02-28 | 2011-04-07 | 34d | 19d |  |  | 2128h |  | 1,005,756.89 | 1,005,756.89 |
| 117 | 3.2.2.2 | Columns [1st ] |  | 10d | 2011-03-12 | 2011-03-22 | 111FS+7d |  |  | 2011-02-28 | 2011-03-10 | 10d | 19d | 0d | Steel Fixer [280%]; Carpenter [420%]; Labour [280%] | 784h |  | 200,675 | 200,675 |
| 118 | 3.2.2.2 | Slab and beams [1st] |  | 13d | 2011-03-24 | 2011-04-07 | 117FS+1d |  |  | 2011-03-13 | 2011-03-27 | 13d | 19d | 0d | Steel Fixer [646.2%]; Carpenter [646.2%] | 1344h |  | 805,081.89 | 805,081.89 |
| 119 | 1.1.5.3.3.1.3 | shuttering removal |  | 10d | 2011-04-09 | 2011-04-19 | 118 |  |  | 2011-03-28 | 2011-04-07 | 10d | 42d | 0d |  |  |  |  |  |
| 120 | 3.2.2.3 | **Architectural** |  | 12d | 2011-04-20 | 2011-05-03 |  |  |  | 2011-04-09 | 2011-04-21 | 12d | 42d |  |  | 840h |  | 141,647.73 | 141,647.73 |
| 121 | 3.2.2.3 | Masonry [1st] |  | 12d | 2011-04-20 | 2011-05-03 | 118, 114, 119 |  |  | 2011-04-09 | 2011-04-21 | 12d | 42d | 23d | Mason [583.3%]; Labour [291.7%] | 840h |  | 141,647.73 | 141,647.73 |
| 122 | 3.2.3 | **2nd Floor Floor** |  | 50d | 2011-04-17 | 2011-06-13 |  |  |  | 2011-04-05 | 2011-06-01 | 50d | 19d |  |  | 2968h |  | 1,147,404.62 | 1,147,404.62 |
| 123 | 3.2.3.2 | **Structural** |  | 38d | 2011-04-17 | 2011-05-30 |  |  |  | 2011-04-05 | 2011-05-18 | 38d | 19d |  |  | 2128h |  | 1,005,756.89 | 1,005,756.89 |
| 124 | 3.2.3.2 | Columns [2nd] |  | 12d | 2011-04-17 | 2011-04-30 | 118FS+7d |  |  | 2011-04-05 | 2011-04-18 | 12d | 19d | 0d | Steel Fixer [233.3%]; Carpenter [350%]; Labour [233.3%] | 784h |  | 200,675 | 200,675 |
| 125 | 3.2.3.2 | Slab and beams [2nd] |  | 15d | 2011-05-02 | 2011-05-18 | 124FS+1d |  |  | 2011-04-20 | 2011-05-07 | 15d | 19d | 0d | Steel Fixer [560%]; Carpenter [560%] | 1344h |  | 805,081.89 | 805,081.89 |
| 126 | 1.1.5.3.4.1.3 | shuttering removal |  | 10d | 2011-05-19 | 2011-05-30 | 125 |  |  | 2011-05-08 | 2011-05-18 | 10d | 19d | 0d |  |  |  |  |  |
| 127 | 3.2.3.3 | **Architectural** |  | 12d | 2011-05-31 | 2011-06-13 |  |  |  | 2011-05-19 | 2011-06-01 | 12d | 19d |  |  | 840h |  | 141,647.73 | 141,647.73 |
| 128 | 3.2.3.3 | Masonry [2nd] |  | 12d | 2011-05-31 | 2011-06-13 | 125, 121, 126 |  |  | 2011-05-19 | 2011-06-01 | 12d | 19d |  | Mason [583.3%]; Labour [291.7%] | 840h |  | 141,647.73 | 141,647.73 |
| 129 | 3.3 | **stage 4 ( Pro2 : Pro11 , Pro B : Pro G)** |  | 160d | 2011-01-01 A | 2011-07-05 |  | 9% | 145.17d | 2011-01-01 | 2011-06-26 | 152d | 0d |  |  | 9710.4h | 56h | 5,713,190.97 | 5,713,190.97 |
| 130 | 3.3.1 | **Foundation** |  | 88d | 2011-01-01 A | 2011-04-12 |  | 35% | 57.04d | 2011-01-01 | 2011-04-03 | 80d | 40d |  |  | 806.4h | 56h | 2,201,178 | 2,201,178 |
| 131 | 3.3.1 | Excavation [FN] |  | 8d | 2011-01-01 A | 2011-01-09 A | 45 | 100% |  | 2011-01-01 | 2011-01-09 | 8d |  |  | Excavator [43.8%] | 28h | 28h | 32,508 | 32,508 |
| 132 | 3.3.1 | Plain Concrete [FN] |  | 5d | 2011-01-27 | 2011-02-01 | 139 |  |  | 2011-01-18 | 2011-01-23 | 5d | 0d |  | Carpenter [126%]; Labour [84%] | 84h |  | 172,457 | 172,457 |
| 133 | 3.3.1 | Reinforced Concrete for Foundation ( Tie & Ground Beams &Columns neck) [FN] |  | 6d | 2011-02-02 | 2011-02-08 | 132 |  |  | 2011-01-24 | 2011-01-30 | 6d | 0d |  | Carpenter [280%]; Steel Fixer [280%]; Labour [70%] | 302.4h |  | 1,297,990 | 1,297,990 |
| 134 | 3.3.1 | Water Proofing For Slab On Grade [FN] |  | 3d | 2011-04-04 | 2011-04-06 | 140 |  |  | 2011-03-26 | 2011-03-28 | 3d | 40d | 0d | Labour [70%] | 16.8h |  | 29,013 | 29,013 |
| 135 | 3.3.1 | Compacted Backfilling [FN] |  | 3d | 2011-03-27 | 2011-03-29 | 136 |  |  | 2011-03-17 | 2011-03-20 | 3d | 40d | 0d | Louder [140%] | 33.6h |  | 20,832 | 20,832 |
| 136 | 3.3.1 | Water Proofing For Foundation [FN] |  | 5d | 2011-03-21 | 2011-03-26 | 145FS+7d |  |  | 2011-03-12 | 2011-03-16 | 5d | 40d | 0d | Louder [84%] | 33.6h |  | 13,600 | 13,600 |
| 137 | 3.3.1 | Reinforced Concrete for Slab On Grade [FN] |  | 5d | 2011-04-07 | 2011-04-12 | 134 |  |  | 2011-03-29 | 2011-04-03 | 5d | 40d | 0d | Steel Fixer [140%]; Carpenter [140%]; Labour [70%] | 140h |  | 347,510 | 347,510 |
| 138 | 3.3.1 | Removal [FN] |  | 10d | 2011-01-02 A | 2011-01-12 A | 131SS, 104SS | 100% |  | 2011-01-02 | 2011-01-12 | 10d |  |  | Louder [35%] | 28h | 28h | 50,123 | 50,123 |
| 139 | 3.3.1 | Soil Replacement [FN] |  | 5d | 2011-01-22 A | 2011-01-26 | 141 | 20% | 4d | 2011-01-12 | 2011-01-17 | 5d | 0d |  | Labour [140%] | 56h |  | 118,470 | 118,470 |
| 140 | 3.3.1 | Blinding P.C [FN] |  | 4d | 2011-03-30 | 2011-04-03 | 135 |  |  | 2011-03-21 | 2011-03-24 | 4d | 40d | 0d | Carpenter [157.5%]; Labour [105%] | 84h |  | 118,675 | 118,675 |
| 141 | 3.3.1 | Submerse Exacavation level [FN] | milestone | 0d | 2011-01-10 A | 2011-01-10 A | 131 | 100% |  | 2011-01-10 | 2011-01-11 | 2d |  |  |  |  |  |  |  |

| ID | WBS | Task | Type | Duration | Start | Finish | Predecessors | Complete | Remaining | Baseline start | Baseline finish | Baseline duration | Total slack | Free slack | Resources | Work | Actual work | Cost | Baseline cost |
| --- | --- | --- | --- | --- | --- | --- | --- | --- | --- | --- | --- | --- | --- | --- | --- | --- | --- | --- | --- |
| 142 | 3.3.7 | **Ground Floor** |  | 64d | 2011-02-09 | 2011-04-24 |  |  |  | 2011-01-31 | 2011-04-14 | 64d | 0d |  |  | 2968h |  | 1,191,028.73 | 1,191,028.73 |
| 143 | 3.3.7.2 | **Structural** |  | 37d | 2011-02-09 | 2011-03-23 |  |  |  | 2011-01-31 | 2011-03-14 | 37d | 0d |  |  | 2128h |  | 1,049,381 | 1,049,381 |
| 144 | 3.3.7.2 | Columns [GR] |  | 12d | 2011-02-09 | 2011-02-22 | 133 |  |  | 2011-01-31 | 2011-02-13 | 12d | 0d |  | Steel Fixer [233.3%]; Carpenter [350%]; Labour [233.3%] | 784h |  | 244,300 | 244,300 |
| 145 | 3.3.7.2 | Slab and beams [GR] |  | 14d | 2011-02-24 | 2011-03-12 | 144FS+1d |  |  | 2011-02-15 | 2011-03-02 | 14d | 0d |  | Steel Fixer [600%]; Carpenter [600%] | 1344h |  | 805,081 | 805,081 |
| 146 | 1.1.5.4.2.1.3 | shuttering removal |  | 10d | 2011-03-13 | 2011-03-23 | 145 |  |  | 2011-03-03 | 2011-03-14 | 10d | 57d | 17d |  |  |  |  |  |
| 147 | 3.3.7.3 | **Architectural** |  | 10d | 2011-04-13 | 2011-04-24 |  |  |  | 2011-04-04 | 2011-04-14 | 10d | 40d |  |  | 840h |  | 141,647.73 | 141,647.73 |
| 148 | 3.3.7.3 | Masonry [GR] |  | 10d | 2011-04-13 | 2011-04-24 | 145, 137, 146 |  |  | 2011-04-04 | 2011-04-14 | 10d | 40d | 11d | Mason [700%]; Labour [350%] | 840h |  | 141,647.73 | 141,647.73 |
| 149 | 3.3.2 | **1st Floor Floor** |  | 53d | 2011-03-21 | 2011-05-21 |  |  |  | 2011-03-12 | 2011-05-11 | 53d | 0d |  |  | 2968h |  | 1,164,854.62 | 1,164,854.62 |
| 150 | 3.3.2.2 | **Structural** |  | 41d | 2011-03-21 | 2011-05-07 |  |  |  | 2011-03-12 | 2011-04-27 | 41d | 0d |  |  | 2128h |  | 1,023,206.89 | 1,023,206.89 |
| 151 | 3.3.2.2 | Columns [1st ] |  | 13d | 2011-03-21 | 2011-04-04 | 145FS+7d |  |  | 2011-03-12 | 2011-03-26 | 13d | 0d |  | Steel Fixer [215.4%]; Carpenter [323.1%]; Labour [215.4%] | 784h |  | 218,125 | 218,125 |
| 152 | 3.3.2.2 | Slab and beams [1st] |  | 17d | 2011-04-06 | 2011-04-25 | 151FS+1d |  |  | 2011-03-28 | 2011-04-16 | 17d | 0d |  | Steel Fixer [494.1%]; Carpenter [494.1%] | 1344h |  | 805,081.89 | 805,081.89 |
| 153 | 1.1.5.4.3.1.3 | shuttering removal |  | 10d | 2011-04-26 | 2011-05-07 | 152 |  |  | 2011-04-17 | 2011-04-27 | 10d | 29d | 0d |  |  |  |  |  |
| 154 | 3.3.2.3 | **Architectural** |  | 12d | 2011-05-08 | 2011-05-21 |  |  |  | 2011-04-28 | 2011-05-11 | 12d | 29d |  |  | 840h |  | 141,647.73 | 141,647.73 |
| 155 | 3.3.2.3 | Masonry [1st] |  | 12d | 2011-05-08 | 2011-05-21 | 152, 148, 153 |  |  | 2011-04-28 | 2011-05-11 | 12d | 29d |  | Mason [583.3%]; Labour [291.7%] | 840h |  | 141,647.73 | 141,647.73 |
| 156 | 3.3.3 | **2nd Floor Floor** |  | 54d | 2011-05-04 | 2011-07-05 |  |  |  | 2011-04-25 | 2011-06-26 | 54d | 0d |  |  | 2968h |  | 1,156,129.62 | 1,156,129.62 |
| 157 | 3.3.3.2 | **Structural** |  | 44d | 2011-05-04 | 2011-06-23 |  |  |  | 2011-04-25 | 2011-06-14 | 44d | 0d |  |  | 2128h |  | 1,014,481.89 | 1,014,481.89 |
| 158 | 3.3.3.2 | Columns [2nd] |  | 15d | 2011-05-04 | 2011-05-21 | 152FS+7d |  |  | 2011-04-25 | 2011-05-11 | 15d | 0d |  | Steel Fixer [186.7%]; Carpenter [280%]; Labour [186.7%] | 784h |  | 209,400 | 209,400 |
| 159 | 3.3.3.2 | Slab and beams [2nd] |  | 18d | 2011-05-23 | 2011-06-12 | 158FS+1d |  |  | 2011-05-14 | 2011-06-02 | 18d | 0d |  | Steel Fixer [466.7%]; Carpenter [466.7%] | 1344h |  | 805,081.89 | 805,081.89 |
| 160 | 1.1.5.4.4.1.3 | shuttering removal |  | 10d | 2011-06-13 | 2011-06-23 | 159 |  |  | 2011-06-04 | 2011-06-14 | 10d | 0d |  |  |  |  |  |  |
| 161 | 3.3.3.3 | **Architectural** |  | 10d | 2011-06-25 | 2011-07-05 |  |  |  | 2011-06-15 | 2011-06-26 | 10d | 0d |  |  | 840h |  | 141,647.73 | 141,647.73 |
| 162 | 3.3.3.3 | Masonry [2nd] |  | 10d | 2011-06-25 | 2011-07-05 | 159, 155, 160 |  |  | 2011-06-15 | 2011-06-26 | 10d | 0d |  | Mason [700%]; Labour [350%] | 840h |  | 141,647.73 | 141,647.73 |
| 163 | 3.6 | **stage 5 ( Pro2 : Pro16, Pro A : Pro B )** |  | 86d | 2011-01-01 A | 2011-04-10 |  | 12% | 75.42d | 2011-01-01 | 2011-03-31 | 78d | 74d |  |  | 2402.4h | 28h | 813,361.73 | 813,361.73 |
| 164 | 3.6.1 | **Foundation** |  | 76d | 2011-01-01 A | 2011-03-29 |  | 19% | 61.86d | 2011-01-01 | 2011-03-20 | 68d | 74d |  |  | 778.4h | 28h | 511,174 | 511,174 |
| 165 | 3.6.1 | Excavation [FN] | milestone | 0d | 2011-01-01 A | 2011-01-09 A | 45 | 100% |  | 2011-01-01 | 2011-01-09 | 8d |  |  | Excavator [43.8%] |  |  | 14,938 | 14,938 |
| 166 | 3.6.1 | Plain Concrete [FN] |  | 5d | 2011-01-27 | 2011-02-01 | 173 |  |  | 2011-01-18 | 2011-01-23 | 5d | 74d | 0d | Carpenter [126%]; Labour [84%] | 84h |  | 14,140 | 14,140 |
| 167 | 3.6.1 | Reinforced Concrete for Foundation ( Tie & Ground Beams &Columns neck) [FN] |  | 6d | 2011-02-02 | 2011-02-08 | 166 |  |  | 2011-01-24 | 2011-01-30 | 6d | 74d | 0d | Carpenter [280%]; Steel Fixer [280%]; Labour [70%] | 302.4h |  | 108,410 | 108,410 |
| 168 | 3.6.1 | Water Proofing For Slab On Grade [FN] |  | 3d | 2011-03-21 | 2011-03-23 | 174 |  |  | 2011-03-12 | 2011-03-14 | 3d | 74d | 0d | Labour [70%] | 16.8h |  | 29,013 | 29,013 |
| 169 | 3.6.1 | Compacted Backfilling [FN] |  | 3d | 2011-03-13 | 2011-03-15 | 170 |  |  | 2011-03-03 | 2011-03-06 | 3d | 74d | 0d | Louder [140%] | 33.6h |  | 9,600 | 9,600 |
| 170 | 3.6.1 | Water Proofing For Foundation [FN] |  | 5d | 2011-03-07 | 2011-03-12 | 178FS+10d |  |  | 2011-02-26 | 2011-03-02 | 5d | 74d | 0d | Louder [84%] | 33.6h |  | 13,600 | 13,600 |
| 171 | 3.6.1 | Reinforced Concrete for Slab On Grade [FN] |  | 5d | 2011-03-24 | 2011-03-29 | 168 |  |  | 2011-03-15 | 2011-03-20 | 5d | 74d | 0d | Steel Fixer [140%]; Carpenter [140%]; Labour [70%] | 140h |  | 188,945 | 188,945 |
| 172 | 3.6.1 | Removal [FN] |  | 5d | 2011-01-02 A | 2011-01-06 A | 165SS, 138SS | 100% |  | 2011-01-02 | 2011-01-06 | 5d |  |  | Louder [70%] | 28h | 28h | 23,033 | 23,033 |
| 173 | 3.6.1 | Soil Replacement [FN] |  | 5d | 2011-01-22 A | 2011-01-26 | 175 | 20% | 4d | 2011-01-12 | 2011-01-17 | 5d | 74d | 0d | Labour [140%] | 56h |  | 54,450 | 54,450 |
| 174 | 3.6.1 | Blinding P.C [FN] |  | 4d | 2011-03-16 | 2011-03-20 | 169 |  |  | 2011-03-07 | 2011-03-10 | 4d | 74d | 0d | Carpenter [157.5%]; Labour [105%] | 84h |  | 55,045 | 55,045 |
| 175 | 3.6.1 | Submerse Exacavation level [FN] |  | 2d | 2011-01-10 A | 2011-01-11 A | 165 | 100% |  | 2011-01-10 | 2011-01-11 | 2d |  |  |  |  |  |  |  |

| ID | WBS | Task | Type | Duration | Start | Finish | Predecessors | Complete | Remaining | Baseline start | Baseline finish | Baseline duration | Total slack | Free slack | Resources | Work | Cost | Baseline cost |
| --- | --- | --- | --- | --- | --- | --- | --- | --- | --- | --- | --- | --- | --- | --- | --- | --- | --- | --- |
| 176 | 3.6.7 | **Ground Floor** |  | 52d | 2011-02-09 | 2011-04-10 |  |  |  | 2011-01-31 | 2011-03-31 | 52d | 74d |  |  | 1624h | 302,187.73 | 302,187.73 |
| 177 | 3.6.7.2 | **Structural** |  | 12d | 2011-02-09 | 2011-02-22 |  |  |  | 2011-01-31 | 2011-02-13 | 12d | 74d |  |  | 784h | 160,540 | 160,540 |
| 178 | 3.6.7.2 | Columns [GR] |  | 12d | 2011-02-09 | 2011-02-22 | 167 |  |  | 2011-01-31 | 2011-02-13 | 12d | 74d | 0d | Steel Fixer [233.3%]; Carpenter [350%]; Labour [233.3%] | 784h | 160,540 | 160,540 |
| 179 | 3.6.7.3 | **Architectural** |  | 10d | 2011-03-30 | 2011-04-10 |  |  |  | 2011-03-21 | 2011-03-31 | 10d | 74d |  |  | 840h | 141,647.73 | 141,647.73 |
| 180 | 3.6.7.3 | Masonry [GR] |  | 10d | 2011-03-30 | 2011-04-10 | 171, 178FS+1d |  |  | 2011-03-21 | 2011-03-31 | 10d | 74d |  | Mason [700%]; Labour [350%] | 840h | 141,647.73 | 141,647.73 |
| 181 | 4 | **Utilities Building (N:1) (Water Tanks + Boiler + Pump Room)** |  | 128d | 2010-12-26 | 2011-05-23 |  |  |  | 2010-12-26 | 2011-05-23 | 128d | 37d |  |  | 3421.6h | 439,118 | 439,118 |
| 182 | 4.1 | **Foundation** |  | 96d | 2010-12-26 | 2011-04-16 |  |  |  | 2010-12-26 | 2011-04-16 | 96d | 37d |  |  | 1064h | 157,269 | 157,269 |
| 183 | 4.1 | Excavation |  | 22d | 2010-12-26 | 2011-01-19 | 3SS |  |  | 2010-12-26 | 2011-01-10 | 14d | 48d | 11d | Excavator [70%] | 123.2h | 4,795 | 4,795 |
| 184 | 4.1 | Plain Concrete |  | 8d | 2011-01-24 | 2011-02-01 | 189, 31 |  |  | 2011-01-24 | 2011-02-01 | 8d | 37d | 0d | Carpenter [140%]; Labour [70%] | 134.4h | 21,210 | 21,210 |
| 185 | 4.1 | Reinforced Concrete For Foundation (Tie , Ground Beams , Columns Neck ) |  | 14d | 2011-02-02 | 2011-02-17 | 184, 32 |  |  | 2011-02-02 | 2011-02-17 | 14d | 37d | 0d | Carpenter [210%]; Steel Fixer [210%] | 470.4h | 99,022 | 99,022 |
| 186 | 4.1 | Compacted Backfilling |  | 4d | 2011-03-31 | 2011-04-04 | 187 |  |  | 2011-03-31 | 2011-04-04 | 4d | 37d | 0d | Louder [70%] | 22.4h | 3,120 | 3,120 |
| 187 | 4.1 | Water Proofing For Foundation |  | 4d | 2011-03-27 | 2011-03-30 | 193FS+7d |  |  | 2011-03-27 | 2011-03-30 | 4d | 37d | 0d | Labour [140%] | 44.8h | 870 | 870 |
| 188 | 4.1 | Water Proofing Under Slab On Grade |  | 4d | 2011-04-05 | 2011-04-09 | 186 |  |  | 2011-04-05 | 2011-04-09 | 4d | 37d | 0d | Labour [175%] | 56h | 13,832 | 13,832 |
| 189 | 4.1 | Removal |  | 14d | 2011-01-08 | 2011-01-23 | 183SS, 172 |  |  | 2011-01-08 | 2011-01-23 | 14d | 37d | 0d | Louder [70%] | 78.4h | 7,350 | 7,350 |
| 190 | 4.1 | Slab On Grade |  | 6d | 2011-04-10 | 2011-04-16 | 188 |  |  | 2011-04-10 | 2011-04-16 | 6d | 37d | 0d | Carpenter [140%]; Labour [140%] | 134.4h | 7,070 | 7,070 |
| 191 | 4.2 | **Structural** |  | 34d | 2011-02-19 | 2011-03-29 |  |  |  | 2011-02-19 | 2011-03-29 | 34d | 37d |  |  | 1467.2h | 194,469 | 194,469 |
| 192 | 4.2 | Columns & Retaining Walls |  | 14d | 2011-02-19 | 2011-03-06 | 185 |  |  | 2011-02-19 | 2011-03-06 | 14d | 37d | 0d | Carpenter [350%]; Steel Fixer [350%]; Labour [210%] | 1019.2h | 135,593 | 135,593 |
| 193 | 4.2 | Beams and Slabs |  | 10d | 2011-03-07 | 2011-03-17 | 192 |  |  | 2011-03-07 | 2011-03-17 | 10d | 37d | 0d | Steel Fixer [280%]; Carpenter [280%] | 448h | 58,876 | 58,876 |
| 194 | 1.1.6.2.3 | shuttering removal |  | 10d | 2011-03-19 | 2011-03-29 | 193 |  |  | 2011-03-19 | 2011-03-29 | 10d | 52d | 15d |  |  |  |  |
| 195 | 4.3 | **Architectural** |  | 32d | 2011-04-17 | 2011-05-23 |  |  |  | 2011-04-17 | 2011-05-23 | 32d | 37d |  |  | 890.4h | 87,380 | 87,380 |
| 196 | 4.3 | Masonry Block Walls |  | 12d | 2011-04-17 | 2011-04-30 | 193, 190, 194 |  |  | 2011-04-17 | 2011-04-30 | 12d | 37d | 0d | Mason [630%] | 604.8h | 52,280 | 52,280 |
| 197 | 4.3 | Water Proofing For Tank Floors and Walls |  | 17d | 2011-05-04 | 2011-05-23 | 196FS+3d |  |  | 2011-05-04 | 2011-05-23 | 17d | 37d |  | Labour [210%] | 285.6h | 35,100 | 35,100 |
| 198 | 5 | **Utilities Building (N:2) (Electrical Room)** |  | 68d | 2011-01-16 A | 2011-04-04 |  |  | 68d | 2011-03-31 | 2011-06-04 | 56d | 79d |  |  | 999.6h | 223,431 | 223,431 |
| 199 | 5.1 | **Foundation** |  | 58d | 2011-01-16 A | 2011-03-23 |  |  | 58d | 2011-03-31 | 2011-05-23 | 46d | 79d |  |  | 338.8h | 116,463 | 116,463 |
| 200 | 5.1 | Excavation | milestone | 0d | 2011-01-16 A | 2011-01-16 A | 85 | 100% |  | 2011-03-31 | 2011-04-03 | 3d |  |  | Excavator [35%] |  | 259 | 259 |
| 201 | 5.1 | Plain Concrete |  | 4d | 2011-02-02 | 2011-02-06 | 184, 206, 34 |  |  | 2011-04-04 | 2011-04-07 | 4d | 79d | 0d | Carpenter [70%]; Labour [35%] | 33.6h | 14,140 | 14,140 |
| 202 | 5.1 | Reinforced Concrete For Foundation |  | 7d | 2011-02-07 | 2011-02-14 | 201, 35 |  |  | 2011-04-09 | 2011-04-16 | 7d | 79d | 0d | Carpenter [140%]; Steel Fixer [140%] | 156.8h | 21,200 | 21,200 |
| 203 | 5.1 | Water Proofing For Foundation |  | 3d | 2011-03-09 | 2011-03-12 | 210, 211 |  |  | 2011-05-09 | 2011-05-11 | 3d | 79d | 0d | Labour [70%] | 16.8h | 1,750 | 1,750 |
| 204 | 5.1 | Compacted Backilling |  | 3d | 2011-03-13 | 2011-03-15 | 203 |  |  | 2011-05-12 | 2011-05-15 | 3d | 79d | 0d | Labour [70%] | 16.8h | 888 | 888 |
| 205 | 5.1 | Water Proofing For Slab On Grade |  | 3d | 2011-03-16 | 2011-03-19 | 204 |  |  | 2011-05-16 | 2011-05-18 | 3d | 79d | 0d | Labour [70%] | 16.8h | 3,477 | 3,477 |
| 206 | 5.1 | Removal |  | 3d | 2011-01-16 | 2011-01-18 | 200SS |  |  | 2011-03-31 | 2011-04-03 | 3d | 91d | 12d | Louder [35%] | 8.4h | 60 | 60 |
| 207 | 5.1 | Slab On Grade |  | 4d | 2011-03-20 | 2011-03-23 | 205 |  |  | 2011-05-19 | 2011-05-23 | 4d | 79d | 0d | Carpenter [140%]; Steel Fixer [140%] | 89.6h | 74,689 | 74,689 |

| ID | WBS | Task | Type | Duration | Start | Finish | Predecessors | Baseline start | Baseline finish | Baseline duration | Total slack | Free slack | Resources | Work | Cost | Baseline cost |
| --- | --- | --- | --- | --- | --- | --- | --- | --- | --- | --- | --- | --- | --- | --- | --- | --- |
| 208 | 5.2 | **Structural** |  | 19d | 2011-02-15 | 2011-03-08 |  | 2011-04-17 | 2011-05-08 | 19d | 79d |  |  | 324.8h | 48,752 | 48,752 |
| 209 | 5.2 | Columns |  | 5d | 2011-02-15 | 2011-02-20 | 202 | 2011-04-17 | 2011-04-21 | 5d | 79d | 0d | Carpenter [210%]; Steel Fixer [140%]; Labour [70%] | 168h | 8,616 | 8,616 |
| 210 | 5.2 | Beams & Slabs |  | 7d | 2011-02-21 | 2011-02-28 | 209 | 2011-04-23 | 2011-04-30 | 7d | 79d | 0d | Carpenter [140%]; Steel Fixer [140%] | 156.8h | 40,136 | 40,136 |
| 211 | 1.1.7.2.3 | shuttering removal |  | 7d | 2011-03-01 | 2011-03-08 | 210 | 2011-05-01 | 2011-05-08 | 7d | 79d | 0d |  |  |  |  |
| 212 | 5.3 | **Architectural** |  | 10d | 2011-03-24 | 2011-04-04 |  | 2011-05-24 | 2011-06-04 | 10d | 79d |  |  | 336h | 58,216 | 58,216 |
| 213 | 5.3 | Masonry Block Walls |  | 10d | 2011-03-24 | 2011-04-04 | 207 | 2011-05-24 | 2011-06-04 | 10d | 79d |  | Mason [420%] | 336h | 58,216 | 58,216 |
| 214 | 6 | **Security Rooms** |  | 50d | 2011-04-30 | 2011-06-26 |  | 2011-04-28 | 2011-06-25 | 50d | 8d |  |  | 708.4h | 74,446 | 74,446 |
| 215 | 6.1 | **Foundation** |  | 44d | 2011-04-30 | 2011-06-19 |  | 2011-04-28 | 2011-06-18 | 44d | 8d |  |  | 308h | 26,182 | 26,182 |
| 216 | 6.1 | Excavation |  | 4d | 2011-04-30 | 2011-05-03 | 94FS+14d | 2011-04-28 | 2011-05-02 | 4d | 8d | 0d | Excavator [35%] | 11.2h | 308 | 308 |
| 217 | 6.1 | Plain Concrete |  | 4d | 2011-05-04 | 2011-05-08 | 201, 222, 37 | 2011-05-03 | 2011-05-07 | 4d | 8d | 0d | Carpenter [70%]; Labour [35%] | 33.6h | 9,090 | 9,090 |
| 218 | 6.1 | Reinforced Concrete For Foundation |  | 7d | 2011-05-09 | 2011-05-16 | 217, 38 | 2011-05-08 | 2011-05-15 | 7d | 8d | 0d | Carpenter [140%]; Steel Fixer [140%] | 156.8h | 10,288 | 10,288 |
| 219 | 6.1 | Water Proofing For Foundation |  | 3d | 2011-06-05 | 2011-06-07 | 226FS+7d | 2011-06-04 | 2011-06-06 | 3d | 8d | 0d | Labour [70%] | 16.8h | 1,060 | 1,060 |
| 220 | 6.1 | Compacted Backilling |  | 3d | 2011-06-08 | 2011-06-11 | 219 | 2011-06-07 | 2011-06-09 | 3d | 8d | 0d | Labour [70%] | 16.8h | 360 | 360 |
| 221 | 6.1 | Water Proofing For Slab On Grade |  | 3d | 2011-06-12 | 2011-06-14 | 220 | 2011-06-11 | 2011-06-13 | 3d | 8d | 0d | Labour [70%] | 16.8h | 646 | 646 |
| 222 | 6.1 | Removal |  | 4d | 2011-04-30 | 2011-05-03 | 216SS | 2011-04-28 | 2011-05-02 | 4d | 8d | 0d | Louder [35%] | 11.2h | 390 | 390 |
| 223 | 6.1 | Slab On Grade |  | 4d | 2011-06-15 | 2011-06-19 | 221 | 2011-06-14 | 2011-06-18 | 4d | 8d | 0d | Carpenter [140%] | 44.8h | 4,040 | 4,040 |
| 224 | 6.9 | **Structural** |  | 14d | 2011-05-17 | 2011-06-01 |  | 2011-05-16 | 2011-05-31 | 14d | 8d |  |  | 224h | 19,584 | 19,584 |
| 225 | 6.9 | Columns |  | 4d | 2011-05-17 | 2011-05-21 | 218 | 2011-05-16 | 2011-05-19 | 4d | 8d | 0d | Carpenter [140%]; Steel Fixer [140%]; Labour [70%] | 112h | 5,744 | 5,744 |
| 226 | 6.9 | Beams & Slabs |  | 5d | 2011-05-22 | 2011-05-26 | 225 | 2011-05-21 | 2011-05-25 | 5d | 8d | 0d | Steel Fixer [140%]; Carpenter [140%] | 112h | 13,840 | 13,840 |
| 227 | 1.1.8.2.3 | shuttering removal | milestone | 5d | 2011-05-28 | 2011-06-01 | 226 | 2011-05-26 | 2011-05-31 | 5d | 23d | 15d |  |  |  |  |
| 228 | 6.2 | **Architectural** |  | 6d | 2011-06-20 | 2011-06-26 |  | 2011-06-19 | 2011-06-25 | 6d | 8d |  |  | 176.4h | 28,680 | 28,680 |
| 229 | 6.2 | Masonry Block Walls |  | 6d | 2011-06-20 | 2011-06-26 | 226, 223, 227 | 2011-06-19 | 2011-06-25 | 6d | 8d |  | Mason [367.5%] | 176.4h | 28,680 | 28,680 |
| 230 | 7 | **External Fence** |  | 143d | 2011-01-11 | 2011-06-26 |  | 2011-01-11 | 2011-06-26 | 143d | 8d |  |  | 6847.2h | 491,083 | 491,083 |
| 231 | 7.1 | **Side 1** |  | 125d | 2011-01-11 | 2011-06-05 |  | 2011-01-11 | 2011-06-05 | 125d | 8d |  |  | 1716.4h | 122,770.75 | 122,770.75 |
| 232 | 7.1 | Excavation |  | 7d | 2011-01-11 | 2011-01-18 | 6 | 2011-01-11 | 2011-01-18 | 7d | 8d | 0d | Excavator [40%] | 22.4h | 875 | 875 |
| 233 | 7.1 | Plain Concrete |  | 20d | 2011-01-19 | 2011-02-10 | 238, 40 | 2011-01-19 | 2011-02-10 | 20d | 26d | 0d | Carpenter [49%]; Labour [24.5%] | 117.6h | 15,402.5 | 15,402.5 |
| 234 | 7.1 | Reinforced Concrete For Foundation |  | 30d | 2011-02-12 | 2011-03-17 | 233, 41 | 2011-02-12 | 2011-03-17 | 30d | 26d | 0d | Carpenter [98%]; Steel Fixer [98%] | 470.4h | 39,039 | 39,039 |
| 235 | 7.1 | Masonry Block Works |  | 30d | 2011-05-02 | 2011-06-05 | 239, 237 | 2011-05-02 | 2011-06-05 | 30d | 26d |  | Mason [74.7%] | 179.2h | 49,951.75 | 49,951.75 |
| 236 | 7.1 | Water Proofing For Foundation |  | 4d | 2011-04-24 | 2011-04-27 | 239 | 2011-04-24 | 2011-04-27 | 4d | 26d | 0d | Labour [105%] | 33.6h | 2,310 | 2,310 |
| 237 | 7.1 | Compacted Backilling |  | 3d | 2011-04-28 | 2011-05-01 | 236 | 2011-04-28 | 2011-05-01 | 3d | 26d | 0d | Labour [140%] | 33.6h | 1,225 | 1,225 |
| 238 | 7.1 | Removal |  | 7d | 2011-01-11 | 2011-01-18 | 232SS | 2011-01-11 | 2011-01-18 | 7d | 26d | 0d | Louder [35%] | 19.6h | 956.25 | 956.25 |
| 239 | 7.1 | Columns |  | 30d | 2011-03-20 | 2011-04-23 | 234FS+1d | 2011-03-20 | 2011-04-23 | 30d | 26d | 0d | Carpenter [140%]; Steel Fixer [140%]; Labour [70%] | 840h | 13,011.25 | 13,011.25 |

| ID | WBS | Task | Duration | Start | Finish | Predecessors | Baseline start | Baseline finish | Baseline duration | Total slack | Free slack | Resources | Work | Cost | Baseline cost |
| --- | --- | --- | --- | --- | --- | --- | --- | --- | --- | --- | --- | --- | --- | --- | --- |
| 240 | 7.2 | **Side 2** | 122d | 2011-02-05 | 2011-06-26 |  | 2011-02-05 | 2011-06-26 | 122d | 8d |  |  | 1688.4h | 122,770.75 | 122,770.75 |
| 241 | 7.2 | Excavation | 7d | 2011-02-05 | 2011-02-12 | 232FS+14d | 2011-02-05 | 2011-02-12 | 7d | 8d | 0d | Excavator [40%] | 22.4h | 875 | 875 |
| 242 | 7.2 | Plain Concrete | 20d | 2011-02-13 | 2011-03-07 | 247 | 2011-02-13 | 2011-03-07 | 20d | 8d | 0d | Carpenter [49%]; Labour [24.5%] | 117.6h | 15,402.5 | 15,402.5 |
| 243 | 7.2 | Reinforced Concrete For Foundation | 30d | 2011-03-08 | 2011-04-11 | 242 | 2011-03-08 | 2011-04-11 | 30d | 8d | 0d | Carpenter [98%]; Steel Fixer [98%] | 470.4h | 39,039 | 39,039 |
| 244 | 7.2 | Masonry Block Works | 28d | 2011-05-25 | 2011-06-26 | 248, 246 | 2011-05-25 | 2011-06-26 | 28d | 8d |  | Mason [80%] | 179.2h | 49,951.75 | 49,951.75 |
| 245 | 7.2 | Water Proofing For Foundation | 4d | 2011-05-17 | 2011-05-21 | 248 | 2011-05-17 | 2011-05-21 | 4d | 8d | 0d | Labour [105%] | 33.6h | 2,310 | 2,310 |
| 246 | 7.2 | Compacted Backilling | 3d | 2011-05-22 | 2011-05-24 | 245 | 2011-05-22 | 2011-05-24 | 3d | 8d | 0d | Labour [140%] | 33.6h | 1,225 | 1,225 |
| 247 | 7.2 | Removal | 7d | 2011-02-05 | 2011-02-12 | 241SS | 2011-02-05 | 2011-02-12 | 7d | 8d | 0d | Louder [35%] | 19.6h | 956.25 | 956.25 |
| 248 | 7.2 | Columns | 29d | 2011-04-13 | 2011-05-16 | 243FS+1d | 2011-04-13 | 2011-05-16 | 29d | 8d | 0d | Carpenter [140%]; Steel Fixer [140%]; Labour [70%] | 812h | 13,011.25 | 13,011.25 |
| 249 | 7.3 | **Side 3** | 125d | 2011-01-11 | 2011-06-05 |  | 2011-01-11 | 2011-06-05 | 125d | 26d |  |  | 1716.4h | 122,770.75 | 122,770.75 |
| 250 | 7.3 | Excavation | 7d | 2011-01-11 | 2011-01-18 | 232SS | 2011-01-11 | 2011-01-18 | 7d | 26d | 0d | Excavator [40%] | 22.4h | 875 | 875 |
| 251 | 7.3 | Plain Concrete | 20d | 2011-01-19 | 2011-02-10 | 256 | 2011-01-19 | 2011-02-10 | 20d | 26d | 0d | Carpenter [49%]; Labour [24.5%] | 117.6h | 15,402.5 | 15,402.5 |
| 252 | 7.3 | Reinforced Concrete For Foundation | 30d | 2011-02-12 | 2011-03-17 | 251 | 2011-02-12 | 2011-03-17 | 30d | 26d | 0d | Carpenter [98%]; Steel Fixer [98%] | 470.4h | 39,039 | 39,039 |
| 253 | 7.3 | Masonry Block Works | 30d | 2011-05-02 | 2011-06-05 | 257, 255 | 2011-05-02 | 2011-06-05 | 30d | 26d |  | Mason [74.7%] | 179.2h | 49,951.75 | 49,951.75 |
| 254 | 7.3 | Water Proofing For Foundation | 4d | 2011-04-24 | 2011-04-27 | 257 | 2011-04-24 | 2011-04-27 | 4d | 26d | 0d | Labour [105%] | 33.6h | 2,310 | 2,310 |
| 255 | 7.3 | Compacted Backilling | 3d | 2011-04-28 | 2011-05-01 | 254 | 2011-04-28 | 2011-05-01 | 3d | 26d | 0d | Labour [140%] | 33.6h | 1,225 | 1,225 |
| 256 | 7.3 | Removal | 7d | 2011-01-11 | 2011-01-18 | 250SS | 2011-01-11 | 2011-01-18 | 7d | 26d | 0d | Louder [35%] | 19.6h | 956.25 | 956.25 |
| 257 | 7.3 | Columns | 30d | 2011-03-20 | 2011-04-23 | 252FS+1d | 2011-03-20 | 2011-04-23 | 30d | 26d | 0d | Carpenter [140%]; Steel Fixer [140%]; Labour [70%] | 840h | 13,011.25 | 13,011.25 |
| 258 | 7.4 | **Side 4** | 122d | 2011-02-05 | 2011-06-26 |  | 2011-02-05 | 2011-06-26 | 122d | 8d |  |  | 1726h | 122,770.75 | 122,770.75 |
| 259 | 7.4 | Excavation | 7d | 2011-02-05 | 2011-02-12 | 241SS | 2011-02-05 | 2011-02-12 | 7d | 8d | 0d | Excavator [57.1%] | 32h | 875 | 875 |
| 260 | 7.4 | Plain Concrete | 20d | 2011-02-13 | 2011-03-07 | 265 | 2011-02-13 | 2011-03-07 | 20d | 8d | 0d | Carpenter [49%]; Labour [24.5%] | 117.6h | 15,402.5 | 15,402.5 |
| 261 | 7.4 | Reinforced Concrete For Foundation | 30d | 2011-03-08 | 2011-04-11 | 260 | 2011-03-08 | 2011-04-11 | 30d | 8d | 0d | Carpenter [98%]; Steel Fixer [98%] | 470.4h | 39,039 | 39,039 |
| 262 | 7.4 | Masonry Block Works | 27d | 2011-05-26 | 2011-06-26 | 266, 264 | 2011-05-26 | 2011-06-26 | 27d | 8d |  | Mason [83%] | 179.2h | 49,951.75 | 49,951.75 |
| 263 | 7.4 | Water Proofing For Foundation | 4d | 2011-05-18 | 2011-05-22 | 266 | 2011-05-18 | 2011-05-22 | 4d | 8d | 0d | Labour [105%] | 33.6h | 2,310 | 2,310 |
| 264 | 7.4 | Compacted Backilling | 3d | 2011-05-23 | 2011-05-25 | 263 | 2011-05-23 | 2011-05-25 | 3d | 8d | 0d | Labour [140%] | 33.6h | 1,225 | 1,225 |
| 265 | 7.4 | Removal | 7d | 2011-02-05 | 2011-02-12 | 259SS | 2011-02-05 | 2011-02-12 | 7d | 8d | 0d | Louder [35%] | 19.6h | 956.25 | 956.25 |
| 266 | 7.4 | Columns | 30d | 2011-04-13 | 2011-05-17 | 261FS+1d | 2011-04-13 | 2011-05-17 | 30d | 8d | 0d | Carpenter [140%]; Steel Fixer [140%]; Labour [70%] | 840h | 13,011.25 | 13,011.25 |
