# Aurora Tower Helsinki

Schedule from MS Project, 2026-04-24 to 2031-03-17.

## Calendars

- Standard: Mon-Fri 08:00-12:00, 13:00-17:00; Sat-Sun off.

## Schedule

| ID | Task | Type | Duration | Start | Finish | Predecessors | Total slack | Free slack | Work | Text1 |
| --- | --- | --- | --- | --- | --- | --- | --- | --- | --- | --- |
| 1 | Project Start | milestone | 0d | 2026-04-24 | 2026-04-24 |  | 0d |  |  | TRUE |
| 2 | Design Start | milestone | 0d | 2026-04-24 | 2026-04-24 | 1 | 0d |  |  | TRUE |
| 3 | Design Team Mobilization |  | 5d | 2026-04-24 | 2026-04-30 | 2 | 0d |  | 40h | TRUE |
| 4 | Pre-Application Meeting with Helsinki City Planning Authority |  | 3d | 2026-05-01 | 2026-05-05 | 3 | 22d |  | 24h | FALSE |
| 5 | Topographical Survey and Site Analysis |  | 10d | 2026-05-01 | 2026-05-14 | 3 | 0d |  | 80h | TRUE |
| 6 | Geotechnical Investigation |  | 15d | 2026-05-15 | 2026-06-04 | 5 | 0d |  | 120h | TRUE |
| 7 | Prepare Building Permit Application (Rakennuslupa) |  | 20d | 2026-06-05 | 2026-07-02 | 4, 6 | 0d |  | 160h | TRUE |
| 8 | Submit Building Permit Application |  | 2d | 2026-07-03 | 2026-07-06 | 7 | 0d |  | 16h | TRUE |
| 9 | HSY Water Main Diversion Approval |  | 15d | 2026-07-07 | 2026-07-27 | 8 | 15d |  | 120h | FALSE |
| 10 | Helen Oy District Heating Diversion Approval |  | 20d | 2026-07-07 | 2026-08-03 | 8 | 10d |  | 160h | FALSE |
| 11 | Building Permit Authority Review |  | 30d | 2026-07-07 | 2026-08-17 | 8 | 0d |  | 240h | TRUE |
| 12 | Permitting and Approvals Complete | milestone | 0d | 2026-08-17 | 2026-08-17 | 11, 10, 9 | 0d |  |  | TRUE |
| 13 | Procurement Start | milestone | 0d | 2026-08-17 | 2026-08-17 | 1, 12 | 0d |  |  | TRUE |
| 14 | Develop Specifications for Precast Elements (Spine Beams) |  | 15d | 2026-08-18 | 2026-09-07 | 13 | 10d |  | 120h | FALSE |
| 15 | Develop Specifications for Steel Fabrication (Transfer Beams, Columns) |  | 15d | 2026-08-18 | 2026-09-07 | 13 | 10d |  | 120h | FALSE |
| 16 | Develop Specifications for Elevators and Escalators |  | 15d | 2026-08-18 | 2026-09-07 | 13 | 10d |  | 120h | FALSE |
| 17 | Structural Concept Design |  | 20d | 2026-08-18 | 2026-09-14 | 12 | 145d | 5d | 160h | FALSE |
| 18 | MEP Concept Design |  | 20d | 2026-08-18 | 2026-09-14 | 12 | 145d | 5d | 160h | FALSE |
| 19 | Develop Specifications for Facade Systems (Rain-Screen Carrier Frame) |  | 20d | 2026-08-18 | 2026-09-14 | 13 | 5d |  | 160h | FALSE |
| 20 | Develop Specifications for Facade Systems (EIFS and Cladding Panels) |  | 20d | 2026-08-18 | 2026-09-14 | 13 | 5d |  | 160h | FALSE |
| 21 | Architectural Concept Design |  | 25d | 2026-08-18 | 2026-09-21 | 12 | 140d | 0d | 200h | FALSE |
| 22 | Develop Specifications for MEP Equipment |  | 25d | 2026-08-18 | 2026-09-21 | 13 | 0d |  | 200h | TRUE |
| 23 | Concept Design Review Meeting |  | 5d | 2026-09-22 | 2026-09-28 | 21, 17, 18 | 140d | 0d | 40h | FALSE |
| 24 | Prepare Tender and RFP Documents for All Packages |  | 20d | 2026-09-22 | 2026-10-19 | 14, 15, 19, 20, 22, 16 | 0d |  | 160h | TRUE |
| 25 | Concept Design Complete | milestone | 0d | 2026-09-28 | 2026-09-28 | 23 | 140d | 0d |  | FALSE |
| 26 | Facade Schematic Design |  | 20d | 2026-09-29 | 2026-10-26 | 25 | 150d | 10d | 160h | FALSE |
| 27 | Structural Schematic Design |  | 25d | 2026-09-29 | 2026-11-02 | 25 | 145d | 5d | 200h | FALSE |
| 28 | Architectural Schematic Design |  | 30d | 2026-09-29 | 2026-11-09 | 25 | 140d | 0d | 240h | FALSE |
| 29 | Specifications & Tender Documents Complete | milestone | 0d | 2026-10-19 | 2026-10-19 | 24 | 0d |  |  | TRUE |
| 30 | Vendor Pre-qualification Process |  | 15d | 2026-10-20 | 2026-11-09 | 29 | 0d |  | 120h | TRUE |
| 31 | Schematic Design Review Meeting |  | 5d | 2026-11-10 | 2026-11-16 | 28, 27, 26 | 140d | 0d | 40h | FALSE |
| 32 | Issue RFPs and Tenders to Pre-qualified Vendors |  | 10d | 2026-11-10 | 2026-11-23 | 30 | 0d |  | 80h | TRUE |
| 33 | Schematic Design Complete | milestone | 0d | 2026-11-16 | 2026-11-16 | 31 | 140d | 0d |  | FALSE |
| 34 | Specialist Consultant Interfaces - Facade |  | 10d | 2026-11-17 | 2026-11-30 | 33 | 170d | 30d | 80h | FALSE |
| 35 | Specialist Consultant Interfaces - Structural |  | 15d | 2026-11-17 | 2026-12-07 | 33 | 165d | 25d | 120h | FALSE |
| 36 | Specialist Consultant Interfaces - MEP |  | 15d | 2026-11-17 | 2026-12-07 | 33 | 165d | 25d | 120h | FALSE |
| 37 | Structural Design Development |  | 35d | 2026-11-17 | 2027-01-04 | 33 | 145d | 5d | 280h | FALSE |
| 38 | MEP Design Development |  | 35d | 2026-11-17 | 2027-01-04 | 33 | 145d | 5d | 280h | FALSE |
| 39 | Architectural Design Development |  | 40d | 2026-11-17 | 2027-01-11 | 33 | 140d | 0d | 320h | FALSE |
| 40 | Manage Bid Period and Vendor Queries |  | 30d | 2026-11-24 | 2027-01-04 | 32 | 0d |  | 240h | TRUE |
| 41 | Receive and Log Bids |  | 5d | 2027-01-05 | 2027-01-11 | 40 | 0d |  | 40h | TRUE |
| 42 | Bids Received | milestone | 0d | 2027-01-11 | 2027-01-11 | 41 | 0d |  |  | TRUE |
| 43 | Design Development Review Meeting |  | 5d | 2027-01-12 | 2027-01-18 | 39, 37, 38, 35, 36, 34 | 140d | 0d | 40h | FALSE |
| 44 | Commercial Evaluation and Negotiation Preparation |  | 15d | 2027-01-12 | 2027-02-01 | 42 | 5d |  | 120h | FALSE |
| 45 | Bid Evaluation and Technical Review |  | 20d | 2027-01-12 | 2027-02-08 | 42 | 0d |  | 160h | TRUE |
| 46 | Design Development Complete | milestone | 0d | 2027-01-18 | 2027-01-18 | 43 | 140d | 0d |  | FALSE |
| 47 | Structural IFC Drawings |  | 20d | 2027-01-19 | 2027-02-15 | 46 | 155d | 0d | 160h | FALSE |
| 48 | BIM Model Development |  | 20d | 2027-01-19 | 2027-02-15 | 46 | 140d | 0d | 160h | FALSE |
| 49 | Prepare IFC Drawings |  | 25d | 2027-01-19 | 2027-02-22 | 46 | 150d | 0d | 200h | FALSE |
| 50 | MEP IFC Drawings |  | 25d | 2027-01-19 | 2027-02-22 | 46 | 150d | 0d | 200h | FALSE |
| 51 | Vendor Selection |  | 10d | 2027-02-09 | 2027-02-22 | 45, 44 | 0d |  | 80h | TRUE |
| 52 | Shop Drawings Coordination - Structural |  | 15d | 2027-02-16 | 2027-03-08 | 47 | 155d | 15d | 120h | FALSE |
| 53 | BIM Clash Detection & Resolution |  | 25d | 2027-02-16 | 2027-03-22 | 48 | 140d | 0d | 200h | FALSE |
| 54 | Vendor Selection Complete | milestone | 0d | 2027-02-22 | 2027-02-22 | 51 | 0d |  |  | TRUE |
| 55 | Issue Letters of Intent and Awards |  | 5d | 2027-02-23 | 2027-03-01 | 54 | 0d |  | 40h | TRUE |
| 56 | IFC Review and Issue |  | 10d | 2027-02-23 | 2027-03-08 | 49, 47, 50 | 150d | 10d | 80h | FALSE |
| 57 | Shop Drawings Coordination - Facade |  | 10d | 2027-02-23 | 2027-03-08 | 49 | 155d | 15d | 80h | FALSE |
| 58 | Shop Drawings Coordination - MEP |  | 15d | 2027-02-23 | 2027-03-15 | 50 | 150d | 10d | 120h | FALSE |
| 59 | Contract Negotiations and Final Signing |  | 15d | 2027-03-02 | 2027-03-22 | 55 | 0d |  | 120h | TRUE |
| 60 | Contracts Awarded | milestone | 0d | 2027-03-22 | 2027-03-22 | 59 | 0d |  |  | TRUE |
| 61 | Final Design Coordination Meeting |  | 5d | 2027-03-23 | 2027-03-29 | 56, 53 | 140d | 0d | 40h | FALSE |
| 62 | Place Long-Lead Order for Precast Elements (Spine Beams) |  | 5d | 2027-03-23 | 2027-03-29 | 60 | 35d | 0d | 40h | FALSE |
| 63 | Place Long-Lead Order for Steel Fabrication |  | 5d | 2027-03-23 | 2027-03-29 | 60 | 65d | 0d | 40h | FALSE |
| 64 | Place Long-Lead Order for Facade Systems (Carrier Frame) |  | 5d | 2027-03-23 | 2027-03-29 | 60 | 80d | 0d | 40h | FALSE |
| 65 | Place Order for Facade Cladding Panels (Post-Survey) |  | 5d | 2027-03-23 | 2027-03-29 | 60 | 65d | 0d | 40h | FALSE |
| 66 | Place Long-Lead Order for MEP Equipment |  | 5d | 2027-03-23 | 2027-03-29 | 60 | 45d | 0d | 40h | FALSE |
| 67 | Place Long-Lead Order for Elevators |  | 5d | 2027-03-23 | 2027-03-29 | 60 | 0d |  | 40h | TRUE |
| 68 | Design Complete | milestone | 0d | 2027-03-29 | 2027-03-29 | 61, 52, 57, 58 | 140d | 0d |  | FALSE |
| 69 | MEP (Mechanical, Electrical, Plumbing) Start | milestone | 0d | 2027-03-29 | 2027-03-29 | 1, 68 | 455d | 0d |  | FALSE |
| 70 | MEP Permitting and Approvals |  | 30d | 2027-03-30 | 2027-05-10 | 69 | 455d | 0d | 240h | FALSE |

| ID | Task | Type | Duration | Start | Finish | Predecessors | Total slack | Free slack | Work | Text1 |
| --- | --- | --- | --- | --- | --- | --- | --- | --- | --- | --- |
| 71 | Monitor Facade Carrier Frame Manufacture |  | 45d | 2027-03-30 | 2027-05-31 | 64 | 80d | 0d | 360h | FALSE |
| 72 | Monitor Steel Fabrication Lead Time |  | 60d | 2027-03-30 | 2027-06-21 | 63 | 65d | 0d | 480h | FALSE |
| 73 | Monitor Facade Cladding Panels Manufacture |  | 60d | 2027-03-30 | 2027-06-21 | 65 | 65d | 0d | 480h | FALSE |
| 74 | Monitor MEP Equipment Manufacture Lead Time |  | 75d | 2027-03-30 | 2027-07-12 | 66 | 45d | 0d | 600h | FALSE |
| 75 | Monitor Precast Manufacture Lead Time |  | 90d | 2027-03-30 | 2027-08-02 | 62 | 35d | 0d | 720h | FALSE |
| 76 | Monitor Elevator Manufacture and Installation Prep |  | 120d | 2027-03-30 | 2027-09-13 | 67 | 0d |  | 960h | TRUE |
| 77 | MEP Concept Design |  | 45d | 2027-05-11 | 2027-07-12 | 70 | 455d | 0d | 360h | FALSE |
| 78 | Track Facade Carrier Frame Delivery |  | 10d | 2027-06-01 | 2027-06-14 | 71 | 80d | 0d | 80h | FALSE |
| 79 | Site Receipt Inspection for Facade Carrier Frame |  | 5d | 2027-06-15 | 2027-06-21 | 78 | 80d |  | 40h | FALSE |
| 80 | Track and Coordinate Steel Delivery |  | 10d | 2027-06-22 | 2027-07-05 | 72 | 65d | 0d | 80h | FALSE |
| 81 | Track Facade Cladding Panels Delivery |  | 10d | 2027-06-22 | 2027-07-05 | 73 | 65d | 0d | 80h | FALSE |
| 82 | Site Receipt Inspection for Steel Components |  | 5d | 2027-07-06 | 2027-07-12 | 80 | 65d |  | 40h | FALSE |
| 83 | Site Receipt Inspection for Facade Cladding Panels |  | 5d | 2027-07-06 | 2027-07-12 | 81 | 65d |  | 40h | FALSE |
| 84 | Track and Coordinate MEP Equipment Delivery |  | 10d | 2027-07-13 | 2027-07-26 | 74 | 45d | 0d | 80h | FALSE |
| 85 | MEP Schematic Design |  | 60d | 2027-07-13 | 2027-10-04 | 77 | 455d | 0d | 480h | FALSE |
| 86 | Site Receipt Inspection for MEP Equipment |  | 10d | 2027-07-27 | 2027-08-09 | 84 | 45d |  | 80h | FALSE |
| 87 | Track and Coordinate Precast Delivery |  | 10d | 2027-08-03 | 2027-08-16 | 75 | 35d | 0d | 80h | FALSE |
| 88 | Site Receipt Inspection for Precast Elements |  | 5d | 2027-08-17 | 2027-08-23 | 87 | 35d |  | 40h | FALSE |
| 89 | Track Elevator Delivery and Shaft Readiness |  | 15d | 2027-09-14 | 2027-10-04 | 76 | 0d |  | 120h | TRUE |
| 90 | Site Receipt Inspection for Elevators |  | 5d | 2027-10-05 | 2027-10-11 | 89 | 0d |  | 40h | TRUE |
| 91 | MEP Specialist Consultant Interfaces |  | 20d | 2027-10-05 | 2027-11-01 | 85 | 695d | 145d | 160h | FALSE |
| 92 | MEP Design Development |  | 90d | 2027-10-05 | 2028-02-07 | 85 | 455d | 0d | 720h | FALSE |
| 93 | Long-Lead Deliveries Complete | milestone | 0d | 2027-10-11 | 2027-10-11 | 88, 82, 79, 83, 86, 90 | 0d |  |  | TRUE |
| 94 | Civil & Structural Start | milestone | 0d | 2027-10-11 | 2027-10-11 | 1, 68, 93 | 0d |  |  | TRUE |
| 95 | Procurement Close-Out and Documentation |  | 10d | 2027-10-12 | 2027-10-25 | 93 | 885d | 0d | 80h | FALSE |
| 96 | Permitting and Approvals |  | 60d | 2027-10-12 | 2028-01-03 | 94 | 0d |  | 480h | TRUE |
| 97 | Procurement Complete | milestone | 0d | 2027-10-25 | 2027-10-25 | 95 | 885d |  |  | FALSE |
| 98 | Concept Design |  | 30d | 2028-01-04 | 2028-02-14 | 96 | 0d |  | 240h | TRUE |
| 99 | MEP IFC Drawings |  | 45d | 2028-02-08 | 2028-04-10 | 92 | 455d | 0d | 360h | FALSE |
| 100 | Schematic Design |  | 45d | 2028-02-15 | 2028-04-17 | 98 | 0d |  | 360h | TRUE |
| 101 | MEP Shop Drawings Coordination |  | 30d | 2028-04-11 | 2028-05-22 | 99 | 550d | 0d | 240h | FALSE |
| 102 | MEP Specifications & Tender Documents |  | 30d | 2028-04-11 | 2028-05-22 | 99 | 455d | 0d | 240h | FALSE |
| 103 | Design Development |  | 60d | 2028-04-18 | 2028-07-10 | 100 | 0d |  | 480h | TRUE |
| 104 | MEP BIM Clash Detection & Resolution |  | 25d | 2028-05-23 | 2028-06-26 | 101, 91 | 550d | 0d | 200h | FALSE |
| 105 | MEP Vendor Pre-qualification & Bidding |  | 45d | 2028-05-23 | 2028-07-24 | 102 | 455d | 0d | 360h | FALSE |
| 106 | MEP Design Complete | milestone | 0d | 2028-06-26 | 2028-06-26 | 104 | 550d | 95d |  | FALSE |
| 107 | Specialist Consultant Interfaces |  | 15d | 2028-07-11 | 2028-07-31 | 103 | 80d | 35d | 120h | FALSE |
| 108 | IFC Drawings |  | 30d | 2028-07-11 | 2028-08-21 | 103 | 0d |  | 240h | TRUE |
| 109 | MEP Vendor Selection & Award |  | 15d | 2028-07-25 | 2028-08-14 | 105 | 455d | 0d | 120h | FALSE |
| 110 | MEP Long-Lead Equipment Orders & Delivery Tracking |  | 60d | 2028-08-15 | 2028-11-06 | 109 | 455d | 0d | 480h | FALSE |
| 111 | Shop Drawings Coordination |  | 20d | 2028-08-22 | 2028-09-18 | 108 | 45d | 0d | 160h | FALSE |
| 112 | Specifications & Tender Documents |  | 20d | 2028-08-22 | 2028-09-18 | 108 | 25d | 0d | 160h | FALSE |
| 113 | Long-Lead Orders & Delivery Tracking - MEP Equipment |  | 30d | 2028-08-22 | 2028-10-02 | 108 | 60d |  | 240h | FALSE |
| 114 | Long-Lead Orders & Delivery Tracking - Facade Systems (Rain-Screen, EIFS) |  | 45d | 2028-08-22 | 2028-10-23 | 108 | 45d |  | 360h | FALSE |
| 115 | Long-Lead Orders & Delivery Tracking - Steel Fabrication (Transfer Beams, Columns) |  | 60d | 2028-08-22 | 2028-11-13 | 108 | 30d |  | 480h | FALSE |
| 116 | Long-Lead Orders & Delivery Tracking - Precast Elements (Spine Beams) |  | 90d | 2028-08-22 | 2028-12-25 | 108 | 0d |  | 720h | TRUE |
| 117 | BIM Clash Detection & Resolution |  | 25d | 2028-09-19 | 2028-10-23 | 111, 107 | 45d | 0d | 200h | FALSE |
| 118 | Vendor Pre-qualification & Bidding |  | 30d | 2028-09-19 | 2028-10-30 | 112 | 25d | 0d | 240h | FALSE |
| 119 | Design Complete | milestone | 0d | 2028-10-23 | 2028-10-23 | 117 | 45d |  |  | FALSE |
| 120 | Vendor Selection & Award |  | 15d | 2028-10-31 | 2028-11-20 | 118 | 25d |  | 120h | FALSE |
| 121 | MEP Procurement Complete | milestone | 0d | 2028-11-06 | 2028-11-06 | 106, 110 | 455d | 0d |  | FALSE |
| 122 | MEP Site Mobilization and Temporary Works |  | 10d | 2028-11-07 | 2028-11-20 | 121 | 455d | 80d | 80h | FALSE |
| 123 | Procurement Complete | milestone | 0d | 2028-12-25 | 2028-12-25 | 119, 120, 116, 115, 114, 113 | 0d |  |  | TRUE |
| 124 | Contract Award & Mobilization |  | 10d | 2028-12-26 | 2029-01-08 | 123 | 0d |  | 80h | TRUE |
| 125 | Survey & Setting Out |  | 3d | 2029-01-09 | 2029-01-11 | 124 | 42d |  | 24h | FALSE |
| 126 | Site Establishment |  | 10d | 2029-01-09 | 2029-01-22 | 124 | 0d |  | 80h | TRUE |
| 127 | Site Clearance & Demolition |  | 10d | 2029-01-23 | 2029-02-05 | 126 | 0d |  | 80h | TRUE |
| 128 | Temporary Works (Shoring, Winter Protection) |  | 15d | 2029-01-23 | 2029-02-12 | 126 | 20d |  | 120h | FALSE |
| 129 | Utility Diversions (District Heating, Water) |  | 25d | 2029-02-06 | 2029-03-12 | 127 | 0d |  | 200h | TRUE |
| 130 | Utility Diversions (District Heating, Water) |  | 20d | 2029-03-13 | 2029-04-09 | 122, 129 | 375d | 0d | 160h | FALSE |
| 131 | Bulk Earthworks and Excavation |  | 30d | 2029-03-13 | 2029-04-23 | 127, 129, 128, 125 | 0d |  | 240h | TRUE |
| 132 | Heating System Rough-in - Basement (District Heating Interface) |  | 8d | 2029-04-10 | 2029-04-19 | 130 | 392d | 0d | 64h | FALSE |
| 133 | Plumbing Rough-in - Basement (Supply and Drainage) |  | 12d | 2029-04-10 | 2029-04-25 | 130 | 380d | 0d | 96h | FALSE |
| 134 | Electrical Rough-in - Basement (Cabling and Conduits) |  | 15d | 2029-04-10 | 2029-04-30 | 130 | 375d | 0d | 120h | FALSE |
| 135 | Heating System Rough-in - Ground Floor to Level 4 |  | 10d | 2029-04-20 | 2029-05-03 | 132 | 392d | 268d | 80h | FALSE |
| 136 | Dewatering Installation and Operation |  | 60d | 2029-04-24 | 2029-07-16 | 131 | 0d |  | 480h | TRUE |
| 137 | Plumbing Rough-in - Ground Floor to Level 4 |  | 18d | 2029-04-26 | 2029-05-21 | 133 | 380d | 256d | 144h | FALSE |
| 138 | Electrical Rough-in - Ground Floor to Level 4 (Wiring, Outlets) |  | 20d | 2029-05-01 | 2029-05-28 | 134 | 375d | 251d | 160h | FALSE |
| 139 | Basement Excavation |  | 20d | 2029-07-17 | 2029-08-13 | 136 | 47d |  | 160h | FALSE |
| 140 | Rock-Socketed Piling Foundations |  | 45d | 2029-07-17 | 2029-09-17 | 136 | 0d |  | 360h | TRUE |

| ID | Task | Type | Duration | Start | Finish | Predecessors | Total slack | Free slack | Work | Text1 |
| --- | --- | --- | --- | --- | --- | --- | --- | --- | --- | --- |
| 141 | Rebar for Pile Caps and Ground Beams |  | 10d | 2029-09-18 | 2029-10-01 | 140 | 0d |  | 80h | TRUE |
| 142 | Formwork for Pile Caps and Ground Beams |  | 7d | 2029-10-02 | 2029-10-10 | 141 | 0d |  | 56h | TRUE |
| 143 | Concrete Pour for Pile Caps and Ground Beams |  | 5d | 2029-10-11 | 2029-10-17 | 142 | 0d |  | 40h | TRUE |
| 144 | Rebar for Basement Walls |  | 15d | 2029-10-18 | 2029-11-07 | 139, 143 | 0d |  | 120h | TRUE |
| 145 | Formwork for Basement Walls |  | 10d | 2029-11-08 | 2029-11-21 | 144 | 0d |  | 80h | TRUE |
| 146 | Concrete Pour for Basement Walls |  | 7d | 2029-11-22 | 2029-11-30 | 145 | 0d |  | 56h | TRUE |
| 147 | Waterproofing for Basement Walls |  | 10d | 2029-12-03 | 2029-12-14 | 146 | 0d |  | 80h | TRUE |
| 148 | Rebar for Ground Floor Slab |  | 8d | 2029-12-17 | 2029-12-26 | 147 | 0d |  | 64h | TRUE |
| 149 | Formwork for Ground Floor Slab |  | 5d | 2029-12-27 | 2030-01-02 | 148 | 0d |  | 40h | TRUE |
| 150 | Concrete Pour for Ground Floor Slab |  | 4d | 2030-01-03 | 2030-01-08 | 149 | 0d |  | 32h | TRUE |
| 151 | Substructure Complete | milestone | 0d | 2030-01-08 | 2030-01-08 | 150 | 0d |  |  | TRUE |
| 152 | Substructure Complete | milestone | 0d | 2030-01-08 | 2030-01-08 | 151 | 179d | 0d |  | FALSE |
| 153 | Erect Precast Columns - Basement and Ground Floor |  | 15d | 2030-01-09 | 2030-01-29 | 151 | 0d |  | 120h | TRUE |
| 154 | Mechanical Rough-in - Basement (HVAC Ducts and Pipes) |  | 15d | 2030-01-09 | 2030-01-29 | 130, 152 | 179d | 55d | 120h | FALSE |
| 155 | Roads & Parking Construction |  | 20d | 2030-01-09 | 2030-02-05 | 151 | 289d | 197d | 160h | FALSE |
| 156 | Jump Form Cores and Shear Walls - All Levels |  | 90d | 2030-01-09 | 2030-05-14 | 151 | 97d | 72d | 720h | FALSE |
| 157 | Erect Precast Columns - Levels 1-4 |  | 20d | 2030-01-30 | 2030-02-26 | 153 | 0d |  | 160h | TRUE |
| 158 | Install Composite Transfer Beam at Level 4 |  | 10d | 2030-02-27 | 2030-03-12 | 157 | 35d | 0d | 80h | FALSE |
| 159 | Install Precast Beams and Hollow-Core Slabs - Levels 1-4 |  | 30d | 2030-02-27 | 2030-04-09 | 157 | 0d |  | 240h | TRUE |
| 160 | Erect Precast Columns - Levels 5-13 |  | 40d | 2030-03-13 | 2030-05-07 | 158 | 35d |  | 320h | FALSE |
| 161 | Pour In-Situ Topping Slabs - Levels 1-4 |  | 15d | 2030-04-10 | 2030-04-30 | 159 | 0d |  | 120h | TRUE |
| 162 | Mechanical Rough-in - Ground Floor to Level 4 |  | 20d | 2030-04-17 | 2030-05-14 | 154, 161SS+5d | 124d | 0d | 160h | FALSE |
| 163 | Install Precast Beams and Hollow-Core Slabs - Levels 5-8 |  | 25d | 2030-05-01 | 2030-06-04 | 160SS, 161 | 0d |  | 200h | TRUE |
| 164 | MEP Rough-in Complete - Lower Levels | milestone | 0d | 2030-05-14 | 2030-05-14 | 162, 138, 137, 135 | 124d | 0d |  | FALSE |
| 165 | Heating System Rough-in - Levels 5 to 13 |  | 15d | 2030-05-15 | 2030-06-04 | 164 | 134d | 72d | 120h | FALSE |
| 166 | Plumbing Rough-in - Levels 5 to 13 |  | 22d | 2030-05-15 | 2030-06-13 | 164 | 127d | 65d | 176h | FALSE |
| 167 | Electrical Rough-in - Levels 5 to 13 (Lighting, Power Distribution) |  | 25d | 2030-05-15 | 2030-06-18 | 164 | 124d | 62d | 200h | FALSE |
| 168 | Pour In-Situ Topping Slabs - Levels 5-8 |  | 12d | 2030-06-05 | 2030-06-20 | 163 | 0d |  | 96h | TRUE |
| 169 | Install Precast Beams and Hollow-Core Slabs - Levels 9-13 |  | 30d | 2030-06-21 | 2030-08-01 | 160SS+15d, 168 | 0d |  | 240h | TRUE |
| 170 | Pour In-Situ Topping Slabs - Levels 9-13 |  | 15d | 2030-08-02 | 2030-08-22 | 169 | 0d |  | 120h | TRUE |
| 171 | Mechanical Rough-in - Levels 5 to 13 |  | 25d | 2030-08-09 | 2030-09-12 | 164, 170SS+5d | 62d | 0d | 200h | FALSE |
| 172 | Roof Structure Construction |  | 15d | 2030-08-23 | 2030-09-12 | 170, 156 | 25d |  | 120h | FALSE |
| 173 | Construct Stairs & Ramps - All Levels |  | 40d | 2030-08-23 | 2030-10-17 | 170 | 0d |  | 320h | TRUE |
| 174 | MEP Rough-in Complete | milestone | 0d | 2030-09-12 | 2030-09-12 | 171, 167, 166, 165 | 62d | 0d |  | FALSE |
| 175 | MEP Rough-In Complete | milestone | 0d | 2030-09-12 | 2030-09-12 | 174 | 75d |  |  | FALSE |
| 176 | Heating System Equipment Installation (District Heating Exchangers) |  | 10d | 2030-09-13 | 2030-09-26 | 174 | 77d | 15d | 80h | FALSE |
| 177 | Plumbing Equipment Installation (Pumps, Fixtures) |  | 15d | 2030-09-13 | 2030-10-03 | 174 | 72d | 10d | 120h | FALSE |
| 178 | HVAC Equipment Installation (AHUs, Chillers, Boilers) |  | 20d | 2030-09-13 | 2030-10-10 | 174 | 67d | 5d | 160h | FALSE |
| 179 | Electrical Equipment Installation (Panels, Transformers, Lighting Fixtures) |  | 25d | 2030-09-13 | 2030-10-17 | 174 | 62d | 0d | 200h | FALSE |
| 180 | Superstructure Complete | milestone | 0d | 2030-10-17 | 2030-10-17 | 172, 173 | 0d |  |  | TRUE |
| 181 | Architectural & Interior Finishes Start | milestone | 0d | 2030-10-17 | 2030-10-17 | 1, 180, 182 | 0d |  |  | TRUE |
| 182 | Superstructure Complete | milestone | 0d | 2030-10-17 | 2030-10-17 | 180 | 0d |  |  | TRUE |
| 183 | Envelope Watertight | milestone | 0d | 2030-10-17 | 2030-10-17 | 180 | 30d |  |  | FALSE |
| 184 | Floor Finishes - Basement |  | 4d | 2030-10-18 | 2030-10-23 | 181 | 26d | 6d | 32h | FALSE |
| 185 | Internal Partitions & Plastering - Ground Floor |  | 5d | 2030-10-18 | 2030-10-24 | 181 | 0d |  | 40h | TRUE |
| 186 | Internal Partitions & Plastering - Level 1 |  | 5d | 2030-10-18 | 2030-10-24 | 181 | 0d |  | 40h | TRUE |
| 187 | Internal Partitions & Plastering - Level 2 |  | 5d | 2030-10-18 | 2030-10-24 | 181 | 0d |  | 40h | TRUE |
| 188 | Internal Partitions & Plastering - Level 3 |  | 5d | 2030-10-18 | 2030-10-24 | 181 | 0d |  | 40h | TRUE |
| 189 | Internal Partitions & Plastering - Level 4 |  | 5d | 2030-10-18 | 2030-10-24 | 181 | 0d |  | 40h | TRUE |
| 190 | Internal Partitions & Plastering - Level 5 |  | 5d | 2030-10-18 | 2030-10-24 | 181 | 0d |  | 40h | TRUE |
| 191 | Internal Partitions & Plastering - Level 6 |  | 5d | 2030-10-18 | 2030-10-24 | 181 | 0d |  | 40h | TRUE |
| 192 | Internal Partitions & Plastering - Level 7 |  | 5d | 2030-10-18 | 2030-10-24 | 181 | 0d |  | 40h | TRUE |
| 193 | Internal Partitions & Plastering - Level 8 |  | 5d | 2030-10-18 | 2030-10-24 | 181 | 0d |  | 40h | TRUE |
| 194 | Internal Partitions & Plastering - Level 9 |  | 5d | 2030-10-18 | 2030-10-24 | 181 | 0d |  | 40h | TRUE |
| 195 | Internal Partitions & Plastering - Level 10 |  | 5d | 2030-10-18 | 2030-10-24 | 181 | 0d |  | 40h | TRUE |
| 196 | Internal Partitions & Plastering - Level 11 |  | 5d | 2030-10-18 | 2030-10-24 | 181 | 0d |  | 40h | TRUE |
| 197 | Internal Partitions & Plastering - Level 12 |  | 5d | 2030-10-18 | 2030-10-24 | 181 | 0d |  | 40h | TRUE |
| 198 | Internal Partitions & Plastering - Level 13 |  | 5d | 2030-10-18 | 2030-10-24 | 181 | 0d |  | 40h | TRUE |
| 199 | Boundary Walls & Fencing |  | 10d | 2030-10-18 | 2030-10-31 | 180 | 97d | 5d | 80h | FALSE |
| 200 | Utility Connections |  | 15d | 2030-10-18 | 2030-11-07 | 180 | 92d | 0d | 120h | FALSE |
| 201 | Ductwork, Piping, and Wiring Installation Completion |  | 18d | 2030-10-18 | 2030-11-12 | 178, 179, 177, 176 | 62d | 0d | 144h | FALSE |
| 202 | Internal Partitions & Plastering Complete | milestone | 0d | 2030-10-24 | 2030-10-24 | 185, 186, 187, 188, 189, 190, 191, 192, 193, 194, 195, 196, 197, 198 | 0d |  |  | TRUE |
| 203 | Floor Finishes - Level 1 |  | 4d | 2030-10-25 | 2030-10-30 | 186 | 21d | 1d | 32h | FALSE |
| 204 | Floor Finishes - Level 2 |  | 4d | 2030-10-25 | 2030-10-30 | 187 | 21d | 1d | 32h | FALSE |
| 205 | Floor Finishes - Level 3 |  | 4d | 2030-10-25 | 2030-10-30 | 188 | 21d | 1d | 32h | FALSE |
| 206 | Floor Finishes - Level 4 |  | 4d | 2030-10-25 | 2030-10-30 | 189 | 21d | 1d | 32h | FALSE |
| 207 | Floor Finishes - Level 5 |  | 4d | 2030-10-25 | 2030-10-30 | 190 | 21d | 1d | 32h | FALSE |
| 208 | Floor Finishes - Level 6 |  | 4d | 2030-10-25 | 2030-10-30 | 191 | 21d | 1d | 32h | FALSE |
| 209 | Floor Finishes - Level 7 |  | 4d | 2030-10-25 | 2030-10-30 | 192 | 21d | 1d | 32h | FALSE |
| 210 | Floor Finishes - Level 8 |  | 4d | 2030-10-25 | 2030-10-30 | 193 | 21d | 1d | 32h | FALSE |

| ID | Task | Type | Duration | Start | Finish | Predecessors | Total slack | Free slack | Work | Text1 |
| --- | --- | --- | --- | --- | --- | --- | --- | --- | --- | --- |
| 211 | Floor Finishes - Level 9 |  | 4d | 2030-10-25 | 2030-10-30 | 194 | 21d | 1d | 32h | FALSE |
| 212 | Floor Finishes - Level 10 |  | 4d | 2030-10-25 | 2030-10-30 | 195 | 21d | 1d | 32h | FALSE |
| 213 | Floor Finishes - Level 11 |  | 4d | 2030-10-25 | 2030-10-30 | 196 | 21d | 1d | 32h | FALSE |
| 214 | Floor Finishes - Level 12 |  | 4d | 2030-10-25 | 2030-10-30 | 197 | 21d | 1d | 32h | FALSE |
| 215 | Floor Finishes - Level 13 |  | 4d | 2030-10-25 | 2030-10-30 | 198 | 21d | 1d | 32h | FALSE |
| 216 | Ceiling Works - Ground Floor |  | 4d | 2030-10-25 | 2030-10-30 | 185 | 21d | 0d | 32h | FALSE |
| 217 | Ceiling Works - Level 1 |  | 4d | 2030-10-25 | 2030-10-30 | 186 | 21d | 0d | 32h | FALSE |
| 218 | Ceiling Works - Level 2 |  | 4d | 2030-10-25 | 2030-10-30 | 187 | 21d | 0d | 32h | FALSE |
| 219 | Ceiling Works - Level 3 |  | 4d | 2030-10-25 | 2030-10-30 | 188 | 21d | 0d | 32h | FALSE |
| 220 | Ceiling Works - Level 4 |  | 4d | 2030-10-25 | 2030-10-30 | 189 | 21d | 0d | 32h | FALSE |
| 221 | Ceiling Works - Level 5 |  | 4d | 2030-10-25 | 2030-10-30 | 190 | 21d | 0d | 32h | FALSE |
| 222 | Ceiling Works - Level 6 |  | 4d | 2030-10-25 | 2030-10-30 | 191 | 21d | 0d | 32h | FALSE |
| 223 | Ceiling Works - Level 7 |  | 4d | 2030-10-25 | 2030-10-30 | 192 | 21d | 0d | 32h | FALSE |
| 224 | Ceiling Works - Level 8 |  | 4d | 2030-10-25 | 2030-10-30 | 193 | 21d | 0d | 32h | FALSE |
| 225 | Ceiling Works - Level 9 |  | 4d | 2030-10-25 | 2030-10-30 | 194 | 21d | 0d | 32h | FALSE |
| 226 | Ceiling Works - Level 10 |  | 4d | 2030-10-25 | 2030-10-30 | 195 | 21d | 0d | 32h | FALSE |
| 227 | Ceiling Works - Level 11 |  | 4d | 2030-10-25 | 2030-10-30 | 196 | 21d | 0d | 32h | FALSE |
| 228 | Ceiling Works - Level 12 |  | 4d | 2030-10-25 | 2030-10-30 | 197 | 21d | 0d | 32h | FALSE |
| 229 | Ceiling Works - Level 13 |  | 4d | 2030-10-25 | 2030-10-30 | 198 | 21d | 0d | 32h | FALSE |
| 230 | Floor Finishes - Ground Floor |  | 5d | 2030-10-25 | 2030-10-31 | 185 | 20d | 0d | 40h | FALSE |
| 231 | Wall Finishes - All Levels |  | 25d | 2030-10-25 | 2030-11-28 | 202 | 0d |  | 200h | TRUE |
| 232 | Ceiling Works Complete | milestone | 0d | 2030-10-30 | 2030-10-30 | 216, 217, 218, 219, 220, 221, 222, 223, 224, 225, 226, 227, 228, 229 | 21d |  |  | FALSE |
| 233 | Floor Finishes Complete | milestone | 0d | 2030-10-31 | 2030-10-31 | 184, 230, 203, 204, 205, 206, 207, 208, 209, 210, 211, 212, 213, 214, 215 | 20d |  |  | FALSE |
| 234 | Civil & Structural Complete | milestone | 0d | 2030-11-07 | 2030-11-07 | 155, 200, 199 | 92d |  |  | FALSE |
| 235 | MEP Installation Complete | milestone | 0d | 2030-11-12 | 2030-11-12 | 201 | 62d | 0d |  | FALSE |
| 236 | Heating System Balancing and Commissioning |  | 8d | 2030-11-13 | 2030-11-22 | 235 | 69d | 64d | 64h | FALSE |
| 237 | Plumbing Leak Testing and Drainage Checks |  | 10d | 2030-11-13 | 2030-11-26 | 235 | 67d | 62d | 80h | FALSE |
| 238 | Mechanical Pressure Testing and Flushing |  | 12d | 2030-11-13 | 2030-11-28 | 235 | 65d | 60d | 96h | FALSE |
| 239 | Electrical Testing (Continuity, Insulation) |  | 15d | 2030-11-13 | 2030-12-03 | 235 | 62d | 57d | 120h | FALSE |
| 240 | HVAC Air Balancing and Testing |  | 15d | 2030-11-13 | 2030-12-03 | 235 | 62d | 57d | 120h | FALSE |
| 241 | Interior Rough Finishes Complete | milestone | 0d | 2030-11-28 | 2030-11-28 | 233, 231, 232, 183 | 0d |  |  | TRUE |
| 242 | Balustrades & Handrails - Internal |  | 8d | 2030-11-29 | 2030-12-10 | 241 | 12d |  | 64h | FALSE |
| 243 | Internal Glazing & Windows - All Levels |  | 10d | 2030-11-29 | 2030-12-12 | 241 | 10d |  | 80h | FALSE |
| 244 | Doors & Ironmongery Installation - All Levels |  | 15d | 2030-11-29 | 2030-12-19 | 241 | 5d |  | 120h | FALSE |
| 245 | Joinery Installation - All Levels |  | 20d | 2030-11-29 | 2030-12-26 | 241 | 0d |  | 160h | TRUE |
| 246 | Fixed Finishes Complete | milestone | 0d | 2030-12-26 | 2030-12-26 | 244, 245, 243, 242 | 0d |  |  | TRUE |
| 247 | Fit-Out - Basement Plant & Car Park |  | 10d | 2030-12-27 | 2031-01-09 | 246 | 30d |  | 80h | FALSE |
| 248 | Fit-Out - Ground Floor Lobby & Retail |  | 15d | 2030-12-27 | 2031-01-16 | 246 | 25d |  | 120h | FALSE |
| 249 | Fit-Out - Office Levels 1-13 |  | 40d | 2030-12-27 | 2031-02-20 | 246, 175 | 0d |  | 320h | TRUE |
| 250 | MEP Testing & Commissioning | milestone | 0d | 2031-02-20 | 2031-02-20 | 238, 239, 237, 236, 240, 252 | 5d | 0d |  | FALSE |
| 251 | Fit-Out Complete | milestone | 0d | 2031-02-20 | 2031-02-20 | 247, 248, 249 | 0d |  |  | TRUE |
| 252 | Interior Fit-Out Complete | milestone | 0d | 2031-02-20 | 2031-02-20 | 251 | 5d | 0d |  | FALSE |
| 253 | Testing & Commissioning Complete | milestone | 0d | 2031-02-20 | 2031-02-20 | 250 | 5d | 0d |  | FALSE |
| 254 | Authority Inspection | milestone | 0d | 2031-02-20 | 2031-02-20 | 253 | 10d | 0d |  | FALSE |
| 255 | Practical Completion | milestone | 0d | 2031-02-20 | 2031-02-20 | 254 | 17d |  |  | FALSE |
| 256 | Authority Inspections for MEP Systems |  | 5d | 2031-02-21 | 2031-02-27 | 250, 253 | 5d | 0d | 40h | FALSE |
| 257 | Sanitaryware Installation - All Levels |  | 12d | 2031-02-21 | 2031-03-10 | 251 | 0d |  | 96h | TRUE |
| 258 | MEP Handover Documentation and Snagging |  | 7d | 2031-02-28 | 2031-03-10 | 256, 254 | 5d | 0d | 56h | FALSE |
| 259 | MEP (Mechanical, Electrical, Plumbing) Complete | milestone | 0d | 2031-03-10 | 2031-03-10 | 258 | 5d |  |  | FALSE |
| 260 | Final Cleaning & Snagging |  | 5d | 2031-03-11 | 2031-03-17 | 257 | 0d |  | 40h | TRUE |
| 261 | Architectural & Interior Finishes Complete | milestone | 0d | 2031-03-17 | 2031-03-17 | 260 | 0d |  |  | TRUE |
| 262 | Project Completion | milestone | 0d | 2031-03-17 | 2031-03-17 | 68, 97, 234, 261, 259, 255 | 0d |  |  | TRUE |
