Schedule from MS Project, 2009-11-05 to 2010-09-09.

## Calendars

- Standard: Mon-Thu 08:00-12:00, 13:00-17:00; Fri off; Sat-Sun 08:00-12:00, 13:00-17:00. Exceptions (off unless hours are given): 2009-11-26, 2009-11-28 to 2009-11-30, 2009-12-17, 2010-01-07, 2010-05-01, 2010-07-24.

## Schedule

| ID | Task | Type | Duration | Start | Finish | Predecessors | Baseline start | Baseline finish | Baseline duration | Total slack | Free slack |
| --- | --- | --- | --- | --- | --- | --- | --- | --- | --- | --- | --- |
| 1 | إستلام الموقع | milestone | 0d | 2009-11-05 | 2009-11-05 |  | 2009-11-05 | 2009-11-05 | 0d | 0d |  |
| 2 | تجهيزات الموقع |  | 30d | 2009-11-15 | 2009-12-24 | 1FS+8d | 2009-11-15 | 2009-12-24 | 30d | 0d |  |
| 3 | حفر لزوم الأساسات A,B |  | 26d | 2009-11-23 | 2009-12-28 | 2SS+7d | 2009-11-23 | 2009-12-28 | 26d | 0d |  |
| 4 | إحلال أسفل الأساسات A,B |  | 16d | 2009-12-16 | 2010-01-04 | 3FS-10d | 2009-12-16 | 2010-01-04 | 16d | 0d |  |
| 5 | خرسانة عادية لزوم الأساسات A,B |  | 21d | 2009-12-30 | 2010-01-24 | 4FS-5d | 2009-12-30 | 2010-01-24 | 21d | 0d |  |
| 6 | خرسانه مسلحه لزوم الأساسات A,B |  | 25d | 2010-01-06 | 2010-02-04 | 5FS-15d | 2010-01-06 | 2010-02-04 | 25d | 0d |  |
| 7 | مبانى قصية الردم A,B |  | 10d | 2010-02-06 | 2010-02-16 | 14FS-5d | 2010-02-06 | 2010-02-16 | 10d | 160d | 0d |
| 8 | عزل أفقى لجلسة المبانى A,B |  | 5d | 2010-02-11 | 2010-02-16 | 7FS-5d | 2010-02-11 | 2010-02-16 | 5d | 174d |  |
| 9 | عزل لزوم الأساسات A,B |  | 10d | 2010-02-10 | 2010-02-21 | 6FS-7d, 7FS-6d | 2010-02-10 | 2010-02-21 | 10d | 160d | 0d |
| 10 | ردم حول الأساسات A,B |  | 7d | 2010-02-16 | 2010-02-23 | 9FS-5d | 2010-02-16 | 2010-02-23 | 7d | 160d | 0d |
| 11 | إحلال أسفل دكة الأرضيه A,B |  | 5d | 2010-02-22 | 2010-02-27 | 10FS-2d | 2010-02-22 | 2010-02-27 | 5d | 160d | 0d |
| 12 | خرسانه عاديه لزوم دكة الأرضيه A,B |  | 10d | 2010-02-22 | 2010-03-04 | 11FS-5d | 2010-02-22 | 2010-03-04 | 10d | 160d |  |
| 13 | خرسانة خفيفة لزوم ارضية الاول A |  | 6d | 2010-06-12 | 2010-06-17 | 21FS+6d, 22FS+6d | 2010-06-12 | 2010-06-17 | 6d | 44d | 0d |
| 14 | أعمدة الأرضى A,B |  | 15d | 2010-01-25 | 2010-02-10 | 6FS-10d | 2010-01-25 | 2010-02-10 | 15d | 0d |  |
| 15 | سقف الأرضى A,B |  | 25d | 2010-02-06 | 2010-03-06 | 14FS-5d | 2010-02-06 | 2010-03-06 | 25d | 0d |  |
| 16 | أعمدة الأول A,B |  | 12d | 2010-03-08 | 2010-03-21 | 15FS+1d | 2010-03-08 | 2010-03-21 | 12d | 19d | 0d |
| 17 | مبانى الدور الأرضى A |  | 7d | 2010-03-07 | 2010-03-14 | 15 | 2010-03-07 | 2010-03-14 | 7d | 0d |  |
| 18 | مبانى الدور الارضى B |  | 13d | 2010-03-15 | 2010-03-29 | 17 | 2010-03-15 | 2010-03-29 | 13d | 0d |  |
| 19 | سقف الأول A,B |  | 25d | 2010-03-14 | 2010-04-11 | 16FS-7d | 2010-03-14 | 2010-04-11 | 25d | 19d | 0d |
| 20 | أعمدة الدور الثانى A,B |  | 12d | 2010-04-13 | 2010-04-26 | 19FS+1d | 2010-04-13 | 2010-04-26 | 12d | 19d | 0d |
| 21 | مبانى الدور الأول A |  | 8d | 2010-04-04 | 2010-04-12 | 19FS-7d | 2010-04-04 | 2010-04-12 | 8d | 21d | 0d |
| 22 | مبانى الدور الاول B |  | 44d | 2010-04-13 | 2010-06-03 | 21 | 2010-04-13 | 2010-06-03 | 44d | 21d | 0d |
| 23 | سقف الدور الثانى A,B |  | 25d | 2010-04-19 | 2010-05-18 | 20FS-7d | 2010-04-19 | 2010-05-18 | 25d | 19d | 0d |
| 24 | دروة السطوح A,B |  | 7d | 2010-05-17 | 2010-05-24 | 23FS-2d | 2010-05-17 | 2010-05-24 | 7d | 49d | 0d |
| 25 | عزل رطوبه للأسطح A |  | 9d | 2010-05-25 | 2010-06-03 | 24 | 2010-05-25 | 2010-06-03 | 9d | 49d | 0d |
| 26 | عزل رطوبه للأسطح B |  | 17d | 2010-06-05 | 2010-06-23 | 25 | 2010-06-05 | 2010-06-23 | 17d | 49d | 0d |
| 27 | عزل حرارى للأسطح A |  | 7d | 2010-06-05 | 2010-06-12 | 25 | 2010-06-05 | 2010-06-12 | 7d | 60d | 0d |
| 28 | عزل حرارى للأسطح B |  | 1d? | 2010-06-24 | 2010-06-24 | 26 | 2010-06-24 | 2010-06-24 | 1d? | 49d | 0d |
| 29 | دفرة ميول للأسطح A |  | 1d | 2010-06-13 | 2010-06-13 | 27 | 2010-06-13 | 2010-06-13 | 1d | 60d | 11d |
| 30 | دفرة ميول للأسطح B |  | 1d | 2010-06-26 | 2010-06-26 | 28 | 2010-06-26 | 2010-06-26 | 1d | 49d | 0d |
| 31 | مبانى الدور الثانى A |  | 10d | 2010-05-02 | 2010-05-12 | 23SS+10d | 2010-05-02 | 2010-05-12 | 10d | 19d | 0d |
| 32 | مبانى الدور الثانى B |  | 17d | 2010-05-06 | 2010-05-25 | 31FS-6d | 2010-05-06 | 2010-05-25 | 17d | 19d | 0d |
| 33 | تمديدات مواسير الكهرباء للدور الارضى A |  | 6d | 2010-03-15 | 2010-03-21 | 17 | 2010-03-15 | 2010-03-21 | 6d | 14d | 0d |
| 34 | تمديدات مواسير الكهرباء للدور الارضى B |  | 6d | 2010-03-30 | 2010-04-05 | 18 | 2010-03-30 | 2010-04-05 | 6d | 25d | 0d |
| 35 | باسبارات للدور الثانى A |  | 37d | 2010-05-25 | 2010-07-06 | 37SS | 2010-05-25 | 2010-07-06 | 37d | 55d |  |
| 36 | تمديدات مواسير الكهرباء للدور الثانى B |  | 13d | 2010-05-26 | 2010-06-09 | 32 | 2010-05-26 | 2010-06-09 | 13d | 61d | 21d |
| 37 | باسبارات للدور الاول A |  | 55d | 2010-05-25 | 2010-07-28 | 47FS+25d | 2010-05-25 | 2010-07-28 | 55d | 37d | 0d |
| 38 | تمديدات مواسير الكهرباء للدور الاول B |  | 11d | 2010-06-05 | 2010-06-16 | 22 | 2010-06-05 | 2010-06-16 | 11d | 72d |  |
| 39 | تمديدات مواسير الصرف و التغذيه الداخليه للدور الاول A,B |  | 6d | 2010-06-12 | 2010-06-17 | 21, 42, 22 | 2010-06-12 | 2010-06-17 | 6d | 71d |  |
| 40 | تمديدات مواسير الصرف و التغذيه الداخليه للدور الارضى A,B |  | 22d | 2010-05-18 | 2010-06-12 | 17, 43FS+16d, 18 | 2010-05-18 | 2010-06-12 | 22d | 0d |  |
| 41 | تمديدات مواسير الصرف و التغذيه الخارجيه A,B |  | 36d | 2010-06-30 | 2010-08-11 | 17FS+15d, 18FS+15d, 155FF+15d, 40FS+15d | 2010-06-30 | 2010-08-11 | 36d | 0d |  |
| 42 | عزل الحمامات الدور الاول B |  | 6d | 2010-06-05 | 2010-06-10 | 21, 22 | 2010-06-05 | 2010-06-10 | 6d | 44d | 0d |
| 43 | عزل الحمامات الدور الارضى A,B |  | 6d | 2010-04-21 | 2010-04-27 | 17, 18FS+19d | 2010-04-21 | 2010-04-27 | 6d | 0d |  |
| 44 | البياض الخارجى A,B |  | 60d | 2010-05-09 | 2010-07-17 | 31FS-15d, 32FS-15d | 2010-05-09 | 2010-07-17 | 60d | 19d | 0d |
| 45 | الجرافياتو A,B |  | 30d | 2010-06-21 | 2010-07-26 | 44FF+7d | 2010-06-21 | 2010-07-26 | 30d | 39d |  |
| 46 | البياض الداخلى للدور الثانى A |  | 10d | 2010-05-13 | 2010-05-24 | 31 | 2010-05-13 | 2010-05-24 | 10d | 67d | 35d |
| 47 | البياض الداخلى للدور الاول A |  | 10d | 2010-04-13 | 2010-04-24 | 21 | 2010-04-13 | 2010-04-24 | 10d | 32d | 0d |
| 48 | البياض الداخلى للدور الاول B |  | 15d | 2010-06-05 | 2010-06-21 | 22 | 2010-06-05 | 2010-06-21 | 15d | 21d | 0d |
| 49 | البياض الداخلى للدور الارضى A |  | 12d | 2010-03-22 | 2010-04-04 | 33 | 2010-03-22 | 2010-04-04 | 12d | 14d | 0d |
| 50 | البياض الداخلى للدور الارضى B |  | 18d | 2010-04-06 | 2010-04-26 | 34 | 2010-04-06 | 2010-04-26 | 18d | 25d | 0d |
| 51 | الدهانات الداخليه للدور الاول A |  | 60d | 2010-04-25 | 2010-07-04 | 47 | 2010-04-25 | 2010-07-04 | 60d | 32d | 0d |
| 52 | الدهانات الداخلية للدور الثانى A |  | 25d | 2010-07-05 | 2010-08-03 | 46, 51 | 2010-07-05 | 2010-08-03 | 25d | 32d |  |
| 53 | بياض داخلى الثانى B |  | 15d | 2010-06-30 | 2010-07-17 | 44FF | 2010-06-30 | 2010-07-17 | 15d | 31d | 0d |
| 54 | مونة ايبوكسية فوق الخرسانة الخفيفة للدور الثانى A |  | 10d | 2010-07-08 | 2010-07-19 | 158FS+10d | 2010-07-08 | 2010-07-19 | 10d | 44d |  |
| 55 | الدهانات الداخلية للدور الاول B |  | 30d | 2010-06-22 | 2010-07-27 | 48, 61FF+7d, 64FF+7d | 2010-06-22 | 2010-07-27 | 30d | 21d | 0d |
| 56 | الدهانات الداخليه للدور الارضى A |  | 120d | 2010-04-05 | 2010-08-24 | 49 | 2010-04-05 | 2010-08-24 | 120d | 14d |  |
| 57 | الدهانات الداخلية للدور الارضى B |  | 90d | 2010-04-27 | 2010-08-11 | 50 | 2010-04-27 | 2010-08-11 | 90d | 25d |  |
| 58 | بلاط موزايكو الارضى B |  | 10d | 2010-04-27 | 2010-05-09 | 50 | 2010-04-27 | 2010-05-09 | 10d | 105d |  |
| 59 | بلاط موزايكو الثانى B |  | 15d | 2010-07-18 | 2010-08-04 | 53 | 2010-07-18 | 2010-08-04 | 15d | 31d |  |
| 60 | سورناجا أرضيات الدور الاول A |  | 8d | 2010-06-20 | 2010-06-28 | 47, 146FS+21d | 2010-06-20 | 2010-06-28 | 8d | 52d | 6d |
| 61 | سيراميك ارضيات الدور الاول B |  | 12d | 2010-06-22 | 2010-07-05 | 48, 146FS+14d | 2010-06-22 | 2010-07-05 | 12d | 32d | 11d |
| 62 | سيراميك ارضيات الدور الارضى B |  | 12d | 2010-06-12 | 2010-06-24 | 50, 146FS+14d | 2010-06-12 | 2010-06-24 | 12d | 65d |  |
| 63 | سيراميك حوائط الدور الاول A |  | 6d | 2010-06-12 | 2010-06-17 | 21FS+7d, 146FS+14d | 2010-06-12 | 2010-06-17 | 6d | 71d |  |
| 64 | سيراميك حوائط الدور الاول B |  | 9d | 2010-06-13 | 2010-06-22 | 22FS+7d, 146FS+14d, 42 | 2010-06-13 | 2010-06-22 | 9d | 43d | 22d |
| 65 | سيراميك حوائط الدور الارضى B |  | 9d | 2010-06-12 | 2010-06-21 | 18FS+7d, 146FS+14d | 2010-06-12 | 2010-06-21 | 9d | 68d |  |
| 66 | بلاط أسطح A,B |  | 15d | 2010-06-27 | 2010-07-13 | 29, 30 | 2010-06-27 | 2010-07-13 | 15d | 49d |  |
| 67 | صرف مطر A,B |  | 7d | 2010-07-13 | 2010-07-20 | 25, 26, 44FF+3d | 2010-07-13 | 2010-07-20 | 7d | 43d |  |
| 68 | جرانيت لزوم الدرج A,B |  | 15d | 2010-06-26 | 2010-07-12 | 70SS | 2010-06-26 | 2010-07-12 | 15d | 43d | 0d |
| 69 | رخام لزوم الأرضيات B |  | 10d | 2010-06-14 | 2010-06-24 | 50FS+40d | 2010-06-14 | 2010-06-24 | 10d | 43d | 0d |
| 70 | رخام لزوم تكسيات الحوائط A,B |  | 15d | 2010-06-26 | 2010-07-12 | 69 | 2010-06-26 | 2010-07-12 | 15d | 43d | 0d |

| ID | Task | Duration | Start | Finish | Predecessors | Baseline start | Baseline finish | Baseline duration | Total slack | Free slack | Constraint |
| --- | --- | --- | --- | --- | --- | --- | --- | --- | --- | --- | --- |
| 71 | مبانى من الطوب الزجاجى B | 5d | 2010-03-24 | 2010-03-29 | 18FF, 17FF | 2010-03-24 | 2010-03-29 | 5d | 139d |  |  |
| 72 | الأسقف المعلقه B | 20d | 2010-07-19 | 2010-08-11 | 55FS-7d | 2010-07-19 | 2010-08-11 | 20d | 25d |  |  |
| 73 | جدران ستائريه B | 20d | 2010-07-27 | 2010-08-18 | 44FS+7d | 2010-07-27 | 2010-08-18 | 20d | 19d |  |  |
| 74 | قطاعات من زجاج السيكوريت B | 15d | 2010-07-04 | 2010-07-20 | 48, 55FF-5d | 2010-07-04 | 2010-07-20 | 15d | 43d |  |  |
| 75 | أعمال الأبواب و الشبابيك المعدنيه A,B | 15d | 2010-06-22 | 2010-07-08 | 47, 48 | 2010-06-22 | 2010-07-08 | 15d | 53d |  |  |
| 76 | أعمال الأبواب و الشبابيك الخشبيه A,B | 15d | 2010-06-22 | 2010-07-08 | 47, 48 | 2010-06-22 | 2010-07-08 | 15d | 53d |  |  |
| 77 | أعمال الأبواب و الشبابيك الألومنيوم A,B | 15d | 2010-07-06 | 2010-07-22 | 47, 48, 44FF+5d | 2010-07-06 | 2010-07-22 | 15d | 41d |  |  |
| 78 | أعمال الهاندريل الحديد A,B | 7d | 2010-07-13 | 2010-07-20 | 68 | 2010-07-13 | 2010-07-20 | 7d | 43d |  |  |
| 79 | تركيب الأجهزه الصحيه A,B | 7d | 2010-07-28 | 2010-08-04 | 64, 61, 55 | 2010-07-28 | 2010-08-04 | 7d | 31d |  |  |
| 80 | توريد وتركيب pipe rack | 9d | 2010-06-24 | 2010-07-04 |  | 2010-06-24 | 2010-07-04 | 9d | 0d |  | must start on 2010-06-24 |
| 81 | تصنيع وتوريد لوحات الكهرباء | 40d | 2010-05-10 | 2010-06-24 |  | 2010-05-10 | 2010-06-24 | 40d | 0d |  | must start on 2010-05-10 |
| 82 | نهو الأعمال الكهربيه A,B,C,D,E,F | 10d | 2010-07-28 | 2010-08-08 | 51, 55, 36 | 2010-07-28 | 2010-08-08 | 10d | 21d | 0d |  |
| 83 | أعمال تأسيس شبكة الإنذار و الحريق A,B | 20d | 2010-05-13 | 2010-06-05 | 31 | 2010-05-13 | 2010-06-05 | 20d | 75d | 54d |  |
| 84 | تشغيل شبكة الإنذار و الحريق A,B | 7d | 2010-08-09 | 2010-08-16 | 82, 83, 133, 134, 135 | 2010-08-09 | 2010-08-16 | 7d | 21d |  |  |
| 85 | أعمال تأسيس شبكة التليفونات A,B | 15d | 2010-05-24 | 2010-06-09 | 32SS+15d | 2010-05-24 | 2010-06-09 | 15d | 78d |  |  |
| 86 | تشغيل شبكة التليفونات A,B | 7d | 2010-08-09 | 2010-08-16 | 82 | 2010-08-09 | 2010-08-16 | 7d | 21d |  |  |
| 87 | توصيلات الكهرباء الخارجيه وفوق البيب راك A,B | 10d | 2010-07-05 | 2010-07-15 | 36, 80 | 2010-07-05 | 2010-07-15 | 10d | 47d |  |  |
| 88 | حفر لزوم الأساسات C | 7d | 2009-11-05 | 2009-11-12 |  | 2009-11-05 | 2009-11-12 | 7d | 96d | 0d |  |
| 89 | إحلال أسفل الأساسات C | 12d | 2009-11-09 | 2009-11-22 | 88FS-4d | 2009-11-09 | 2009-11-22 | 12d | 96d | 0d |  |
| 90 | خرسانة عادية لزوم الأساسات C | 10d | 2009-11-18 | 2009-12-03 | 89FS-4d | 2009-11-18 | 2009-12-03 | 10d | 96d | 0d |  |
| 91 | خرسانه مسلحه لزوم الأساسات C | 14d | 2009-11-25 | 2009-12-15 | 90FS-4d | 2009-11-25 | 2009-12-15 | 14d | 96d | 0d |  |
| 92 | خرسانه مسلحه لزوم رقابى الأعمده C | 10d | 2009-12-10 | 2009-12-22 | 91FS-5d | 2009-12-10 | 2009-12-22 | 10d | 96d | 0d |  |
| 93 | مبانى قصية الردم C | 10d | 2009-12-16 | 2009-12-28 | 92FS-5d | 2009-12-16 | 2009-12-28 | 10d | 214d | 0d |  |
| 94 | مبانى قصية الردم D | 10d | 2010-05-22 | 2010-06-01 | 115 | 2010-05-22 | 2010-06-01 | 10d | 13d | 0d |  |
| 95 | احلال اسفل دكة الارضية D | 5d | 2010-06-02 | 2010-06-07 | 94 | 2010-06-02 | 2010-06-07 | 5d | 45d | 0d |  |
| 96 | احلال اسفل دكة الارضية E | 5d | 2010-06-06 | 2010-06-10 |  | 2010-06-06 | 2010-06-10 | 5d | 0d |  | must start on 2010-06-06 |
| 97 | البياض الخارجى E | 10d | 2010-07-01 | 2010-07-12 | 96, 101 | 2010-07-01 | 2010-07-12 | 10d | 38d | 0d |  |
| 98 | الجرافياتو E | 5d | 2010-07-13 | 2010-07-18 | 97, 120 | 2010-07-13 | 2010-07-18 | 5d | 45d |  |  |
| 99 | الدهانات الداخلية E | 22d | 2010-07-01 | 2010-07-27 | 97SS | 2010-07-01 | 2010-07-27 | 22d | 38d |  |  |
| 100 | مبانى فوق منسوب التشطيب D | 10d | 2010-06-26 | 2010-07-06 | 115, 94FS+20d, 112FF-7d | 2010-06-26 | 2010-07-06 | 10d | 13d | 0d |  |
| 101 | رفع مبانى E | 7d | 2010-06-23 | 2010-06-30 | 116 | 2010-06-23 | 2010-06-30 | 7d | 18d | 0d |  |
| 102 | البياض الخارجى D | 10d | 2010-06-26 | 2010-07-06 | 100SS | 2010-06-26 | 2010-07-06 | 10d | 50d | 4d |  |
| 103 | البياض الداخلى D,E | 20d | 2010-07-07 | 2010-07-31 | 101, 100 | 2010-07-07 | 2010-07-31 | 20d | 13d | 0d |  |
| 104 | الجرافياتو D | 5d | 2010-07-12 | 2010-07-17 | 102, 119 | 2010-07-12 | 2010-07-17 | 5d | 46d |  |  |
| 105 | الدهانات الداخلية D,E | 22d | 2010-08-01 | 2010-08-25 | 103 | 2010-08-01 | 2010-08-25 | 22d | 13d |  |  |
| 106 | عزل أفقى لجلسة المبانى C | 7d | 2009-12-23 | 2009-12-30 | 93FS-5d | 2009-12-23 | 2009-12-30 | 7d | 214d |  |  |
| 107 | عزل لزوم الأساسات C | 10d | 2009-12-19 | 2009-12-29 | 92FS-4d | 2009-12-19 | 2009-12-29 | 10d | 201d | 0d |  |
| 108 | ردم حول الأساسات C | 7d | 2009-12-26 | 2010-01-02 | 107FS-4d | 2009-12-26 | 2010-01-02 | 7d | 201d | 0d |  |
| 109 | إحلال أسفل دكة الأرضيه C | 15d | 2009-12-29 | 2010-01-16 | 108FS-4d | 2009-12-29 | 2010-01-16 | 15d | 201d |  |  |
| 110 | خرسانه مسلحه لزوم الأرضيات C | 30d | 2010-05-13 | 2010-06-16 | 117FS+20d | 2010-05-13 | 2010-06-16 | 30d | 12d | 0d |  |
| 111 | خرسانه مسلحه لزوم الأرضيات D | 15d | 2010-06-08 | 2010-06-24 | 115, 95 | 2010-06-08 | 2010-06-24 | 15d | 45d | 0d |  |
| 112 | خرسانه مسلحه لزوم الأرضيات E | 15d | 2010-06-23 | 2010-07-10 | 116, 96 | 2010-06-23 | 2010-07-10 | 15d | 17d | 0d |  |
| 113 | معالجة فواصل بلاطات المصنع C | 15d | 2010-08-10 | 2010-08-26 | 114 | 2010-08-10 | 2010-08-26 | 15d | 12d |  |  |
| 114 | مونة ايبوكسية لارضيات المصنع C | 20d | 2010-07-17 | 2010-08-09 | 110, 121 | 2010-07-17 | 2010-08-09 | 20d | 12d | 0d |  |
| 115 | تركيب الجمالون D | 17d | 2010-05-02 | 2010-05-20 | 117FS-7d | 2010-05-02 | 2010-05-20 | 17d | 13d | 0d | start no earlier than 2010-05-02 |
| 116 | رفع الجمالون E | 45d | 2010-05-02 | 2010-06-22 | 115SS | 2010-05-02 | 2010-06-22 | 45d | 17d | 0d |  |
| 117 | تركيب الجمالون C | 15d | 2010-04-01 | 2010-04-18 | 92 | 2010-04-01 | 2010-04-18 | 15d | 12d | 0d | start no earlier than 2010-04-01 |
| 118 | مبانى فوق منسوب التشطيب C | 15d | 2010-05-23 | 2010-06-08 | 117, 110FF-7d | 2010-05-23 | 2010-06-08 | 15d | 12d | 0d |  |
| 119 | تركيب الصاج للجمالون D | 7d | 2010-07-04 | 2010-07-11 | 115, 111FS+7d | 2010-07-04 | 2010-07-11 | 7d | 46d | 0d |  |
| 120 | تركيب الصاج للجمالون E | 7d | 2010-06-23 | 2010-06-30 | 116 | 2010-06-23 | 2010-06-30 | 7d | 55d | 10d |  |
| 121 | تركيب الصاج للجمالون C | 15d | 2010-06-29 | 2010-07-15 | 117, 122SS+10d, 110 | 2010-06-29 | 2010-07-15 | 15d | 12d | 0d |  |
| 122 | البياض الخارجى C | 20d | 2010-06-17 | 2010-07-10 | 118FS+7d | 2010-06-17 | 2010-07-10 | 20d | 12d | 0d |  |
| 123 | البياض الداخلى C | 20d | 2010-06-09 | 2010-07-01 | 118, 44FF-20d | 2010-06-09 | 2010-07-01 | 20d | 34d | 0d |  |
| 124 | الجرافياتو C | 20d | 2010-07-05 | 2010-07-28 | 122FS-5d | 2010-07-05 | 2010-07-28 | 20d | 37d |  |  |
| 125 | الدهانات الداخليه C | 30d | 2010-06-27 | 2010-08-01 | 123FS-5d | 2010-06-27 | 2010-08-01 | 30d | 34d |  |  |
| 126 | أعمال الإناره C | 30d | 2010-06-09 | 2010-07-13 | 118 | 2010-06-09 | 2010-07-13 | 30d | 22d | 0d |  |
| 127 | باسبارات الجمالونات C | 40d | 2010-06-06 | 2010-07-21 | 110SS+20d | 2010-06-06 | 2010-07-21 | 40d | 42d |  |  |
| 128 | باسبارات الجمالونات D | 20d | 2010-06-26 | 2010-07-18 | 111 | 2010-06-26 | 2010-07-18 | 20d | 45d |  |  |
| 129 | باسبارات الجمالونات E | 20d | 2010-07-11 | 2010-08-03 | 112 | 2010-07-11 | 2010-08-03 | 20d | 32d |  |  |
| 130 | أعمال الأبواب و الشبابيك المعدنيه C | 10d | 2010-07-03 | 2010-07-13 | 123 | 2010-07-03 | 2010-07-13 | 10d | 49d |  |  |
| 131 | أعمال الأبواب و الشبابيك الألومنيوم C | 10d | 2010-07-03 | 2010-07-13 | 123 | 2010-07-03 | 2010-07-13 | 10d | 49d |  |  |
| 132 | أعمال الصرف C | 7d | 2010-07-17 | 2010-07-25 | 121 | 2010-07-17 | 2010-07-25 | 7d | 40d |  |  |
| 133 | أعمال شبكة الإنذار و الحريق C | 25d | 2010-06-21 | 2010-07-19 | 126FS-20d | 2010-06-21 | 2010-07-19 | 25d | 22d | 0d |  |
| 134 | أعمال شبكة الإنذار و الحريق D | 10d | 2010-07-27 | 2010-08-07 | 133FS+5d | 2010-07-27 | 2010-08-07 | 10d | 22d | 0d |  |
| 135 | أعمال شبكة الإنذار و الحريق E | 10d | 2010-07-27 | 2010-08-07 | 134SS | 2010-07-27 | 2010-08-07 | 10d | 22d | 1d |  |
| 136 | أعمال البردورات | 20d | 2010-07-28 | 2010-08-19 | 122FF+7d, 41FF+7d | 2010-07-28 | 2010-08-19 | 20d | 0d |  |  |
| 137 | بلاط الأرصفة | 15d | 2010-08-16 | 2010-09-01 | 136FS-4d | 2010-08-16 | 2010-09-01 | 15d | 7d |  |  |
| 138 | طبقة واسفلت | 15d | 2010-08-24 | 2010-09-09 | 136FS+3d | 2010-08-24 | 2010-09-09 | 15d | 0d |  |  |
| 139 | حفر السور G | 90d | 2010-03-03 | 2010-06-16 | 1SS+95d | 2010-03-03 | 2010-06-16 | 90d | 22d | 0d |  |
| 140 | عادية الاساسات G | 60d | 2010-04-14 | 2010-06-23 | 139FF+6d | 2010-04-14 | 2010-06-23 | 60d | 30d | 0d |  |

| ID | Task | Duration | Start | Finish | Predecessors | Baseline start | Baseline finish | Baseline duration | Total slack | Free slack | Constraint |
| --- | --- | --- | --- | --- | --- | --- | --- | --- | --- | --- | --- |
| 141 | مسلحة اساسات السور G | 60d | 2010-04-21 | 2010-06-30 | 140FF+6d | 2010-04-21 | 2010-06-30 | 60d | 30d | 0d |  |
| 142 | اعمدة السور G | 60d | 2010-04-28 | 2010-07-07 | 141FF+6d | 2010-04-28 | 2010-07-07 | 60d | 30d | 0d |  |
| 143 | مبانى السور G | 60d | 2010-05-06 | 2010-07-14 | 142FF+6d | 2010-05-06 | 2010-07-14 | 60d | 30d | 0d |  |
| 144 | طبانة السور G | 60d | 2010-05-13 | 2010-07-21 | 143FF+6d | 2010-05-13 | 2010-07-21 | 60d | 30d | 0d |  |
| 145 | بياض السور G | 60d | 2010-05-20 | 2010-07-29 | 144FF+6d | 2010-05-20 | 2010-07-29 | 60d | 30d | 0d |  |
| 146 | اعتماد السيراميك A,B | 2d | 2010-05-24 | 2010-05-25 |  | 2010-05-24 | 2010-05-25 | 2d | 0d |  | must start on 2010-05-24 |
| 147 | جرافياتو السور G | 60d | 2010-05-27 | 2010-08-05 | 145FF+6d | 2010-05-27 | 2010-08-05 | 60d | 30d |  |  |
| 148 | حفر الخزانات H | 3d | 2010-04-07 | 2010-04-10 | 139SS+30d | 2010-04-07 | 2010-04-10 | 3d | 22d | 0d |  |
| 149 | عادية الخزانات H | 4d | 2010-04-11 | 2010-04-14 | 148 | 2010-04-11 | 2010-04-14 | 4d | 125d |  |  |
| 150 | مونة ايبوكسية فوق الخرسانة الخفيفة للدور الاول A | 10d | 2010-07-06 | 2010-07-17 | 13FS+15d, 60 | 2010-07-06 | 2010-07-17 | 10d | 46d |  |  |
| 151 | مسلحة اساسات الخزانات H | 6d | 2010-04-11 | 2010-04-17 | 148 | 2010-04-11 | 2010-04-17 | 6d | 22d | 0d |  |
| 152 | حوائط الخزانات H | 8d | 2010-04-18 | 2010-04-26 | 151 | 2010-04-18 | 2010-04-26 | 8d | 22d | 0d |  |
| 153 | سقف الخزانات H | 20d | 2010-04-27 | 2010-05-20 | 152 | 2010-04-27 | 2010-05-20 | 20d | 36d | 0d |  |
| 154 | عزل الخزان من الخارج H | 3d | 2010-05-22 | 2010-05-24 | 153 | 2010-05-22 | 2010-05-24 | 3d | 50d | 14d |  |
| 155 | معالجة الخزان H | 5d | 2010-06-07 | 2010-06-12 | 154SS, 153FS+14d | 2010-06-07 | 2010-06-12 | 5d | 36d |  |  |
| 156 | حفر غرف الخدمات F | 6d | 2010-05-06 | 2010-05-12 | 152FS+7d | 2010-05-06 | 2010-05-12 | 6d | 22d | 0d |  |
| 157 | عادية اساسات غرف الخدمات F | 4d | 2010-05-13 | 2010-05-17 | 156 | 2010-05-13 | 2010-05-17 | 4d | 22d | 0d |  |
| 158 | خرسانة خفيفة لزوم ارضية الثانى A | 7d | 2010-06-19 | 2010-06-26 | 13 | 2010-06-19 | 2010-06-26 | 7d | 44d | 0d |  |
| 159 | عادية ارضيات غرف الخدمات F | 4d | 2010-07-06 | 2010-07-10 | 163 | 2010-07-06 | 2010-07-10 | 4d | 52d |  |  |
| 160 | مسلحة قواعد الخدمات F | 6d | 2010-05-18 | 2010-05-24 | 157 | 2010-05-18 | 2010-05-24 | 6d | 22d | 0d |  |
| 161 | اعمدة الخدمات F | 6d | 2010-05-25 | 2010-05-31 | 160 | 2010-05-25 | 2010-05-31 | 6d | 22d | 0d |  |
| 162 | سقف الخدمات F | 25d | 2010-06-01 | 2010-06-29 | 161 | 2010-06-01 | 2010-06-29 | 25d | 22d | 0d |  |
| 163 | مبانى الخدمات F | 5d | 2010-06-30 | 2010-07-05 | 162 | 2010-06-30 | 2010-07-05 | 5d | 22d | 0d |  |
| 164 | مبانى قصية الردم F | 3d | 2010-06-01 | 2010-06-03 | 161 | 2010-06-01 | 2010-06-03 | 3d | 81d | 0d |  |
| 165 | ردم F | 2d | 2010-06-05 | 2010-06-06 | 164 | 2010-06-05 | 2010-06-06 | 2d | 81d |  |  |
| 166 | تمديدات مواسير كهرباء F | 2d | 2010-07-06 | 2010-07-07 | 163 | 2010-07-06 | 2010-07-07 | 2d | 27d | 5d |  |
| 167 | البياض الداخلى F | 10d | 2010-07-14 | 2010-07-26 | 166, 163FS+7d | 2010-07-14 | 2010-07-26 | 10d | 22d | 0d |  |
| 168 | البياض الخارجى F | 8d | 2010-07-14 | 2010-07-22 | 163FS+7d | 2010-07-14 | 2010-07-22 | 8d | 36d | 0d |  |
| 169 | السيراميك F | 5d | 2010-07-27 | 2010-08-01 | 167 | 2010-07-27 | 2010-08-01 | 5d | 34d |  |  |
| 170 | الدهانات الداخلية F | 15d | 2010-07-27 | 2010-08-12 | 167 | 2010-07-27 | 2010-08-12 | 15d | 22d | 0d |  |
| 171 | الجرافياتو F | 5d | 2010-07-25 | 2010-07-29 | 168 | 2010-07-25 | 2010-07-29 | 5d | 36d |  |  |
| 172 | تاسيس تغذية وصرف حمامى غرفتى الامن F | 3d | 2010-07-14 | 2010-07-17 | 163FS+7d | 2010-07-14 | 2010-07-17 | 3d | 46d |  |  |
| 173 | تركيب اجهزة صحى غرفتى الامن F | 2d | 2010-08-14 | 2010-08-15 | 170 | 2010-08-14 | 2010-08-15 | 2d | 22d |  |  |
| 174 | ابواب وشبابيك F | 5d | 2010-07-27 | 2010-08-01 | 167 | 2010-07-27 | 2010-08-01 | 5d | 34d |  |  |
