# 3-Storey Residential Block

Schedule from Primavera P6, 2027-03-01 to 2027-11-08, costs in USD.
Must finish by 2027-11-08

## Resources

| Resource | Group |
| --- | --- |
| Preliminaries | labor |
| Groundworks | labor |
| Survey | labor |
| Piling | labor |
| Concrete | labor |
| Brickwork | labor |
| MEP | labor |
| Plastering | labor |
| Joinery | labor |
| Roofing | labor |
| Tiling | labor |
| External | labor |
| Decoration | labor |
| Flooring | labor |

## Schedule

| ID | Activity | Type | Duration | Start | Finish | Predecessors | Total float | Resources | Cost |
| --- | --- | --- | --- | --- | --- | --- | --- | --- | --- |
| 1 | Mobilisation & Site Setup |  | 10d | 2027-03-01 | 2027-03-12 |  | 0d | Preliminaries [400 h] | 45,000 |
| 2 | Site Clearance & Demolition |  | 8d | 2027-03-15 | 2027-03-24 | 1 | 0d | Groundworks [256 h] | 12,000 |
| 38 | Milestone: Start on Site | milestone | 0d | 2027-03-15 | 2027-03-15 | 1 FF | 170d |  |  |
| 3 | Setting Out |  | 3d | 2027-03-25 | 2027-03-29 | 2 | 0d | Survey [48 h] | 3,500 |
| 4 | Excavation & Bulk Earthworks |  | 12d | 2027-03-30 | 2027-04-14 | 3 | 0d | Groundworks [576 h] | 28,000 |
| 5 | Piling (if required) | milestone | 0d | 2027-04-15 | 2027-04-15 | 4 FF | 147d | Piling |  |
| 6 | Foundations — Strip/Pad Concrete |  | 8d | 2027-04-15 | 2027-04-26 | 4 | 0d | Concrete [384 h] | 42,000 |
| 7 | Substructure Walls & Plinth Beams |  | 10d | 2027-04-27 | 2027-05-10 | 6 | 0d | Brickwork [320 h] | 18,000 |
| 8 | Ground Floor Slab |  | 8d | 2027-05-11 | 2027-05-20 | 7 | 0d | Concrete [384 h] | 35,000 |
| 9 | Ground Floor Columns & Core Walls |  | 10d | 2027-05-21 | 2027-06-03 | 8 | 0d | Concrete [480 h] | 38,000 |
| 10 | First Floor Slab |  | 10d | 2027-06-04 | 2027-06-17 | 9 | 39d | Concrete [480 h] | 40,000 |
| 15 | Brick Envelope — Ground Floor |  | 15d | 2027-06-04 | 2027-06-24 | 9 | 0d | Brickwork [1200 h] | 55,000 |
| 21 | Internal Partitions — GF |  | 12d | 2027-06-09 | 2027-06-24 | 15 FF | 0d | Brickwork [384 h] | 22,000 |
| 11 | First Floor Columns & Core Walls |  | 10d | 2027-06-18 | 2027-07-01 | 10 | 39d | Concrete [480 h] | 38,000 |
| 16 | Brick Envelope — First Floor |  | 15d | 2027-06-25 | 2027-07-15 | 15, 10 | 39d | Brickwork [1200 h] | 55,000 |
| 22 | Internal Partitions — FF |  | 12d | 2027-06-25 | 2027-07-12 | 21 | 0d | Brickwork [384 h] | 22,000 |
| 12 | Second Floor Slab |  | 10d | 2027-07-02 | 2027-07-15 | 11 | 39d | Concrete [480 h] | 40,000 |
| 23 | Internal Partitions — SF |  | 12d | 2027-07-13 | 2027-07-28 | 22 | 0d | Brickwork [384 h] | 22,000 |
| 13 | Second Floor Columns & Core Walls |  | 10d | 2027-07-16 | 2027-07-29 | 12 | 43d | Concrete [480 h] | 38,000 |
| 17 | Brick Envelope — Second Floor |  | 15d | 2027-07-16 | 2027-08-05 | 16, 12 | 39d | Brickwork [1200 h] | 55,000 |
| 24 | MEP First Fix — All Floors |  | 20d | 2027-07-29 | 2027-08-25 | 23 | 0d | MEP [1600 h] | 85,000 |
| 14 | Roof Slab |  | 8d | 2027-07-30 | 2027-08-10 | 13 | 43d | Concrete [384 h] | 42,000 |
| 25 | Plastering — All Floors |  | 18d | 2027-08-02 | 2027-08-25 | 24 SS+2d | 0d | Plastering [1152 h] | 65,000 |
| 19 | External Windows & Door Frames |  | 12d | 2027-08-06 | 2027-08-23 | 17 | 39d | Joinery [576 h] | 48,000 |
| 18 | Roofing — Insulation & Waterproofing |  | 10d | 2027-08-11 | 2027-08-24 | 14, 17 | 43d | Roofing [320 h] | 32,000 |
| 20 | External Doors — Aluminium/PVC |  | 5d | 2027-08-24 | 2027-08-30 | 19 | 39d | Joinery [120 h] | 12,000 |
| 26 | Floor Tiling — Wet Areas |  | 12d | 2027-08-26 | 2027-09-10 | 25 | 0d | Tiling [384 h] | 36,000 |
| 27 | Carpentry — Internal Doors & Skirting |  | 10d | 2027-08-26 | 2027-09-08 | 25 | 2d | Joinery [480 h] | 30,000 |
| 32 | External Works — Hard & Soft Landscape |  | 15d | 2027-08-31 | 2027-09-20 | 20, 18 | 39d | External [600 h] | 45,000 |
| 33 | Boundary Walls & Fencing |  | 8d | 2027-08-31 | 2027-09-09 | 32 SS | 41d | External [256 h] | 18,000 |
| 34 | Utility Connections |  | 10d | 2027-08-31 | 2027-09-13 | 32 SS | 39d | MEP [320 h] | 25,000 |
| 28 | MEP Second Fix — All Floors |  | 12d | 2027-09-13 | 2027-09-28 | 26, 27 | 0d | MEP [960 h] | 55,000 |
| 29 | Decoration & Painting — All Floors |  | 15d | 2027-09-29 | 2027-10-19 | 28 | 0d | Decoration [960 h] | 45,000 |
| 30 | Kitchen Installation |  | 10d | 2027-09-29 | 2027-10-12 | 28 | 5d | Joinery [480 h] | 72,000 |
| 31 | Flooring — Carpet/Laminate |  | 8d | 2027-10-01 | 2027-10-12 | 29 SS+2d | 5d | Flooring [384 h] | 36,000 |
| 35 | Clean & Final Inspection |  | 5d | 2027-10-20 | 2027-10-26 | 29, 30, 31 | 0d | Preliminaries [160 h] | 8,000 |
| 36 | Snagging & Defect Rectification |  | 8d | 2027-10-27 | 2027-11-05 | 35 | 0d | Preliminaries [192 h] | 5,000 |
| 37 | Milestone: Practical Completion | milestone | 0d | 2027-11-08 | 2027-11-08 | 36, 33, 34 | 0d |  |  |

Notes:
- 1: Expenses: Mobilisation & Site Setup — Materials/Plant/Sublet 45000
- 2: Expenses: Site Clearance & Demolition — Materials/Plant/Sublet 12000
- 3: Expenses: Setting Out — Materials/Plant/Sublet 3500
- 4: Expenses: Excavation & Bulk Earthworks — Materials/Plant/Sublet 28000
- 6: Expenses: Foundations — Strip/Pad Concrete — Materials/Plant/Sublet 42000
- 7: Expenses: Substructure Walls & Plinth Beams — Materials/Plant/Sublet 18000
- 8: Expenses: Ground Floor Slab — Materials/Plant/Sublet 35000
- 9: Expenses: Ground Floor Columns & Core Walls — Materials/Plant/Sublet 38000
- 10: Expenses: First Floor Slab — Materials/Plant/Sublet 40000
- 15: Expenses: Brick Envelope — Ground Floor — Materials/Plant/Sublet 55000
- 21: Expenses: Internal Partitions — GF — Materials/Plant/Sublet 22000
- 11: Expenses: First Floor Columns & Core Walls — Materials/Plant/Sublet 38000
- 16: Expenses: Brick Envelope — First Floor — Materials/Plant/Sublet 55000
- 22: Expenses: Internal Partitions — FF — Materials/Plant/Sublet 22000
- 12: Expenses: Second Floor Slab — Materials/Plant/Sublet 40000
- 23: Expenses: Internal Partitions — SF — Materials/Plant/Sublet 22000
- 13: Expenses: Second Floor Columns & Core Walls — Materials/Plant/Sublet 38000
- 17: Expenses: Brick Envelope — Second Floor — Materials/Plant/Sublet 55000
- 24: Expenses: MEP First Fix — All Floors — Materials/Plant/Sublet 85000
- 14: Expenses: Roof Slab — Materials/Plant/Sublet 42000
- 25: Expenses: Plastering — All Floors — Materials/Plant/Sublet 65000
- 19: Expenses: External Windows & Door Frames — Materials/Plant/Sublet 48000
- 18: Expenses: Roofing — Insulation & Waterproofing — Materials/Plant/Sublet 32000
- 20: Expenses: External Doors — Aluminium/PVC — Materials/Plant/Sublet 12000
- 26: Expenses: Floor Tiling — Wet Areas — Materials/Plant/Sublet 36000
- 27: Expenses: Carpentry — Internal Doors & Skirting — Materials/Plant/Sublet 30000
- 32: Expenses: External Works — Hard & Soft Landscape — Materials/Plant/Sublet 45000
- 33: Expenses: Boundary Walls & Fencing — Materials/Plant/Sublet 18000
- 34: Expenses: Utility Connections — Materials/Plant/Sublet 25000
- 28: Expenses: MEP Second Fix — All Floors — Materials/Plant/Sublet 55000
- 29: Expenses: Decoration & Painting — All Floors — Materials/Plant/Sublet 45000
- 30: Expenses: Kitchen Installation — Materials/Plant/Sublet 72000
- 31: Expenses: Flooring — Carpet/Laminate — Materials/Plant/Sublet 36000
- 35: Expenses: Clean & Final Inspection — Materials/Plant/Sublet 8000
- 36: Expenses: Snagging & Defect Rectification — Materials/Plant/Sublet 5000
