# 3-Storey Residential Block — 12 Apartments

Schedule from Primavera P6, 2027-03-01 to 2027-12-22, costs in USD.
Must finish by 2027-12-22

## Resources

| Resource | Group |
| --- | --- |
| PM | labor |
| General | labor |
| Groundworks | labor |
| Concrete | labor |
| External | labor |
| Electrical | labor |
| Waterproofing | labor |
| Flooring | labor |
| Brickwork | labor |
| Drylining | labor |
| M&E | labor |
| Joinery | labor |
| Multi-trade | labor |
| Envelope | labor |
| Utilities | labor |
| Roofing | labor |
| Commissioning | labor |
| Metalwork | labor |
| Cleaning | labor |

## Schedule

| ID | Activity | Type | Duration | Start | Finish | Predecessors | Total float | Resources | Cost |
| --- | --- | --- | --- | --- | --- | --- | --- | --- | --- |
| 1 | Pre-commencement & Insurance |  | 5d | 2027-03-01 | 2027-03-05 |  | 0d | PM [120 h] |  |
| 2 | Mobilisation & Site Setup |  | 5d | 2027-03-08 | 2027-03-12 | 1 | 0d | General [240 h] | 45,000 |
| 3 | Site Establishment (Temp Facilities, Hoarding, Services) |  | 7d | 2027-03-15 | 2027-03-23 | 2 | 0d | General [336 h] | 35,000 |
| 4 | Site Clearance & Levelling |  | 5d | 2027-03-24 | 2027-03-30 | 3 | 0d | Groundworks [200 h] | 18,000 |
| 64 | M1 — Mobilisation Complete | milestone | 0d | 2027-03-24 | 2027-03-24 | 3 | 195d |  |  |
| 5 | Excavate Foundations |  | 10d | 2027-03-31 | 2027-04-13 | 4 | 0d | Groundworks [400 h] | 42,000 |
| 6 | Lean Concrete Blinding |  | 3d | 2027-04-14 | 2027-04-16 | 5 | 0d | Concrete [144 h] | 12,000 |
| 7 | RC Foundations & Ground Beams |  | 15d | 2027-04-19 | 2027-05-07 | 6 | 0d | Concrete [960 h] | 95,000 |
| 8 | Cure Foundations (min 7 days) |  | 7d | 2027-05-10 | 2027-05-18 | 7 | 0d | Concrete [112 h] |  |
| 9 | Backfill & Compaction |  | 5d | 2027-05-19 | 2027-05-25 | 8 | 0d | Groundworks [200 h] | 22,000 |
| 10 | Ground Floor Slab (Formwork, Rebar, Concrete) |  | 10d | 2027-05-26 | 2027-06-08 | 9 | 0d | Concrete [640 h] | 78,000 |
| 55 | Foul & Surface Water Drainage |  | 8d | 2027-05-26 | 2027-06-04 | 9 | 130d | Groundworks [320 h] | 48,000 |
| 56 | External Paving & Hard Landscaping |  | 7d | 2027-06-07 | 2027-06-15 | 55 | 130d | External [280 h] | 35,000 |
| 11 | Cure Ground Floor Slab |  | 7d | 2027-06-09 | 2027-06-17 | 10 | 0d | Concrete [112 h] |  |
| 57 | Soft Landscaping & Boundary Fencing |  | 5d | 2027-06-16 | 2027-06-22 | 56 | 130d | External [160 h] | 18,000 |
| 58 | External Lighting & Signage |  | 5d | 2027-06-16 | 2027-06-22 | 56 | 130d | Electrical [120 h] | 15,000 |
| 12 | Waterproof Tanking to Ground Floor |  | 5d | 2027-06-18 | 2027-06-24 | 11 | 89d | Waterproofing [160 h] | 15,000 |
| 14 | Level 1 — Column Formwork & Rebar |  | 7d | 2027-06-18 | 2027-06-28 | 11 | 0d | Concrete [448 h] | 55,000 |
| 65 | M2 — Substructure Complete | milestone | 0d | 2027-06-18 | 2027-06-18 | 11 | 133d |  |  |
| 13 | Floor Insulation & Screed (Ground Floor) |  | 7d | 2027-06-25 | 2027-07-05 | 12 | 89d | Flooring [224 h] | 28,000 |
| 15 | Level 1 — Column Concrete Pour & Cure |  | 7d | 2027-06-29 | 2027-07-07 | 14 | 0d | Concrete [448 h] |  |
| 16 | Level 1 — Slab Formwork & Rebar |  | 8d | 2027-07-08 | 2027-07-19 | 15 | 0d | Concrete [512 h] | 62,000 |
| 17 | Level 1 — Slab Concrete Pour |  | 3d | 2027-07-20 | 2027-07-22 | 16 | 0d | Concrete [192 h] |  |
| 18 | Level 1 — Slab Cure |  | 7d | 2027-07-23 | 2027-08-02 | 17 | 0d | Concrete [112 h] |  |
| 19 | Level 2 — Column Formwork & Rebar |  | 7d | 2027-08-03 | 2027-08-11 | 18, 17 SS+5d | 0d | Concrete [448 h] | 55,000 |
| 32 | Brickwork Leaf Ties & Cavity Tray Install |  | 5d | 2027-08-03 | 2027-08-09 | 18 | 40d | Brickwork [240 h] | 12,000 |
| 69 | Floor 1 — Partitions & Door Frames |  | 5d | 2027-08-03 | 2027-08-09 | 18, 13 | 69d | Drylining [160 h] |  |
| 70 | Floor 1 — 1st Fix M&E (Elec + Mech + Plumbing) |  | 5d | 2027-08-05 | 2027-08-11 | 69 SS+2d | 69d | M&E [160 h] |  |
| 33 | External Brickwork — Ground Floor |  | 12d | 2027-08-10 | 2027-08-25 | 32 | 40d | Brickwork [768 h] | 85,000 |
| 20 | Level 2 — Column Concrete Pour & Cure |  | 7d | 2027-08-12 | 2027-08-20 | 19 | 0d | Concrete [448 h] |  |
| 71 | Floor 1 — Insulation & Plasterboard |  | 5d | 2027-08-12 | 2027-08-18 | 70 | 69d | Drylining [160 h] |  |
| 72 | Floor 1 — 2nd Fix M&E & Plumbing |  | 4d | 2027-08-19 | 2027-08-24 | 71 | 69d | M&E [128 h] |  |
| 34 | External Brickwork — Level 1 |  | 12d | 2027-08-20 | 2027-09-06 | 33 SS+8d | 40d | Brickwork [768 h] | 85,000 |
| 21 | Level 2 — Slab Formwork & Rebar |  | 8d | 2027-08-23 | 2027-09-01 | 20 | 0d | Concrete [512 h] | 62,000 |
| 73 | Floor 1 — K&B Units Install |  | 3d | 2027-08-25 | 2027-08-27 | 72 | 69d | Joinery [72 h] |  |
| 74 | Floor 1 — Finishes (Tile, Floor, Paint, Skirting) |  | 5d | 2027-08-30 | 2027-09-03 | 73 | 69d | Multi-trade [160 h] |  |
| 35 | External Brickwork — Level 2 |  | 12d | 2027-09-01 | 2027-09-16 | 34 SS+8d | 40d | Brickwork [768 h] | 85,000 |
| 22 | Level 2 — Slab Concrete Pour |  | 3d | 2027-09-02 | 2027-09-06 | 21 | 0d | Concrete [192 h] |  |
| 23 | Level 2 — Slab Cure |  | 7d | 2027-09-07 | 2027-09-15 | 22 | 0d | Concrete [112 h] |  |
| 24 | Level 3 — Column Formwork & Rebar |  | 7d | 2027-09-16 | 2027-09-24 | 23, 22 SS+5d | 0d | Concrete [448 h] | 55,000 |
| 75 | Floor 2 — Partitions & Door Frames |  | 5d | 2027-09-16 | 2027-09-22 | 23 | 37d | Drylining [160 h] |  |
| 36 | Windows & External Doors Install |  | 10d | 2027-09-17 | 2027-09-30 | 35 | 40d | Envelope [640 h] | 120,000 |
| 76 | Floor 2 — 1st Fix M&E (Elec + Mech + Plumbing) |  | 5d | 2027-09-20 | 2027-09-24 | 75 SS+2d | 37d | M&E [160 h] |  |
| 25 | Level 3 — Column Concrete Pour & Cure |  | 7d | 2027-09-27 | 2027-10-05 | 24 | 0d | Concrete [448 h] |  |
| 77 | Floor 2 — Insulation & Plasterboard |  | 5d | 2027-09-27 | 2027-10-01 | 76 | 37d | Drylining [160 h] |  |
| 54 | Service Connections — Water, Gas & Electric |  | 5d | 2027-10-01 | 2027-10-07 | 36 | 40d | Utilities [320 h] | 65,000 |
| 67 | M4 — Envelope Watertight | milestone | 0d | 2027-10-01 | 2027-10-01 | 36 | 58d |  |  |
| 78 | Floor 2 — 2nd Fix M&E & Plumbing |  | 4d | 2027-10-04 | 2027-10-07 | 77 | 37d | M&E [128 h] |  |
| 26 | Level 3 — Slab Formwork & Rebar |  | 8d | 2027-10-06 | 2027-10-15 | 25 | 0d | Concrete [512 h] | 62,000 |
| 79 | Floor 2 — K&B Units Install |  | 3d | 2027-10-08 | 2027-10-12 | 78 | 37d | Joinery [72 h] |  |
| 80 | Floor 2 — Finishes (Tile, Floor, Paint, Skirting) |  | 5d | 2027-10-13 | 2027-10-19 | 79 | 37d | Multi-trade [160 h] |  |
| 27 | Level 3 — Slab Concrete Pour |  | 3d | 2027-10-18 | 2027-10-20 | 26 | 0d | Concrete [192 h] |  |
| 28 | Level 3 — Slab Cure |  | 7d | 2027-10-21 | 2027-10-29 | 27 | 0d | Concrete [112 h] |  |
| 29 | Roof Structure & Deck |  | 10d | 2027-11-01 | 2027-11-12 | 28 | 0d | Roofing [480 h] | 68,000 |
| 66 | M3 — Frame Complete | milestone | 0d | 2027-11-01 | 2027-11-01 | 28 | 37d |  |  |
| 81 | Floor 3 — Partitions & Door Frames |  | 5d | 2027-11-01 | 2027-11-05 | 28 | 0d | Drylining [160 h] |  |
| 82 | Floor 3 — 1st Fix M&E (Elec + Mech + Plumbing) |  | 5d | 2027-11-03 | 2027-11-09 | 81 SS+2d | 0d | M&E [160 h] |  |
| 83 | Floor 3 — Insulation & Plasterboard |  | 5d | 2027-11-10 | 2027-11-16 | 82 | 0d | Drylining [160 h] |  |
| 30 | Roof Insulation & Membrane |  | 7d | 2027-11-15 | 2027-11-23 | 29 | 0d | Roofing [336 h] | 45,000 |
| 84 | Floor 3 — 2nd Fix M&E & Plumbing |  | 4d | 2027-11-17 | 2027-11-22 | 83 | 0d | M&E [128 h] |  |
| 59 | M&E Commissioning & Testing |  | 3d | 2027-11-23 | 2027-11-25 | 72, 78, 84, 54 | 8d | Commissioning [144 h] | 18,000 |
| 85 | Floor 3 — K&B Units Install |  | 3d | 2027-11-23 | 2027-11-25 | 84 | 0d | Joinery [72 h] |  |
| 31 | Roof Flashings & Rainwater Goods |  | 5d | 2027-11-24 | 2027-11-30 | 30 | 0d | Roofing [160 h] | 18,000 |
| 86 | Floor 3 — Finishes (Tile, Floor, Paint, Skirting) |  | 5d | 2027-11-26 | 2027-12-02 | 85 | 0d | Multi-trade [160 h] |  |
| 37 | Brickwork Defect Rectification & Pointing |  | 5d | 2027-12-01 | 2027-12-07 | 31 | 0d | Brickwork [240 h] | 15,000 |
| 53 | Stair Balustrades & Handrails |  | 5d | 2027-12-03 | 2027-12-09 | 86 | 0d | Metalwork [120 h] | 28,000 |
| 60 | Fire Alarm & Sprinkler Testing |  | 5d | 2027-12-08 | 2027-12-14 | 59, 37 | 0d | Commissioning [120 h] | 12,000 |
| 61 | Final Clean |  | 3d | 2027-12-10 | 2027-12-14 | 86, 74, 80, 53 | 0d | Cleaning [288 h] | 8,000 |
| 62 | Snagging & Defect Rectification |  | 5d | 2027-12-15 | 2027-12-21 | 60, 61 | 0d | PM [160 h] | 10,000 |
| 63 | Practical Completion | milestone | 0d | 2027-12-22 | 2027-12-22 | 62, 57, 58 | 0d |  |  |

Notes:
- 2: Expenses: Mobilisation & Site Setup — Materials/Plant/Sublet 45000
- 3: Expenses: Site Establishment (Temp Facilities, Hoarding, Services) — Materials/Plant/Sublet 35000
- 4: Expenses: Site Clearance & Levelling — Materials/Plant/Sublet 18000
- 5: Expenses: Excavate Foundations — Materials/Plant/Sublet 42000
- 6: Expenses: Lean Concrete Blinding — Materials/Plant/Sublet 12000
- 7: Expenses: RC Foundations & Ground Beams — Materials/Plant/Sublet 95000
- 9: Expenses: Backfill & Compaction — Materials/Plant/Sublet 22000
- 10: Expenses: Ground Floor Slab (Formwork, Rebar, Concrete) — Materials/Plant/Sublet 78000
- 55: Expenses: Foul & Surface Water Drainage — Materials/Plant/Sublet 48000
- 56: Expenses: External Paving & Hard Landscaping — Materials/Plant/Sublet 35000
- 57: Expenses: Soft Landscaping & Boundary Fencing — Materials/Plant/Sublet 18000
- 58: Expenses: External Lighting & Signage — Materials/Plant/Sublet 15000
- 12: Expenses: Waterproof Tanking to Ground Floor — Materials/Plant/Sublet 15000
- 14: Expenses: Level 1 — Column Formwork & Rebar — Materials/Plant/Sublet 55000
- 13: Expenses: Floor Insulation & Screed (Ground Floor) — Materials/Plant/Sublet 28000
- 16: Expenses: Level 1 — Slab Formwork & Rebar — Materials/Plant/Sublet 62000
- 19: Expenses: Level 2 — Column Formwork & Rebar — Materials/Plant/Sublet 55000
- 32: Expenses: Brickwork Leaf Ties & Cavity Tray Install — Materials/Plant/Sublet 12000
- 33: Expenses: External Brickwork — Ground Floor — Materials/Plant/Sublet 85000
- 34: Expenses: External Brickwork — Level 1 — Materials/Plant/Sublet 85000
- 21: Expenses: Level 2 — Slab Formwork & Rebar — Materials/Plant/Sublet 62000
- 35: Expenses: External Brickwork — Level 2 — Materials/Plant/Sublet 85000
- 24: Expenses: Level 3 — Column Formwork & Rebar — Materials/Plant/Sublet 55000
- 36: Expenses: Windows & External Doors Install — Materials/Plant/Sublet 120000
- 54: Expenses: Service Connections — Water, Gas & Electric — Materials/Plant/Sublet 65000
- 26: Expenses: Level 3 — Slab Formwork & Rebar — Materials/Plant/Sublet 62000
- 29: Expenses: Roof Structure & Deck — Materials/Plant/Sublet 68000
- 30: Expenses: Roof Insulation & Membrane — Materials/Plant/Sublet 45000
- 59: Expenses: M&E Commissioning & Testing — Materials/Plant/Sublet 18000
- 31: Expenses: Roof Flashings & Rainwater Goods — Materials/Plant/Sublet 18000
- 37: Expenses: Brickwork Defect Rectification & Pointing — Materials/Plant/Sublet 15000
- 53: Expenses: Stair Balustrades & Handrails — Materials/Plant/Sublet 28000
- 60: Expenses: Fire Alarm & Sprinkler Testing — Materials/Plant/Sublet 12000
- 61: Expenses: Final Clean — Materials/Plant/Sublet 8000
- 62: Expenses: Snagging & Defect Rectification — Materials/Plant/Sublet 10000

| ID | Activity | Type | Duration | Start | Finish | Predecessors | Total float |
| --- | --- | --- | --- | --- | --- | --- | --- |
| 68 | M5 — First Occupation | milestone | 0d | 2027-12-22 | 2027-12-22 | 63 | 0d |
