# 3-Storey Residential Block — 12 Apartments

Schedule from Primavera P6, 2027-03-01 to 2027-07-07, costs in USD.
Must finish by 2027-07-07

## Resources

| Resource | Group |
| --- | --- |
| Preliminaries | labor |
| Groundworks | labor |
| Concrete Frame | labor |
| Brickwork | labor |
| Internal Trade | labor |
| M&E | labor |
| Roofing | labor |
| External Works | labor |
| Finishes | labor |

## Schedule

| ID | Activity | Type | Duration | Start | Finish | Predecessors | Total float | Resources | Cost |
| --- | --- | --- | --- | --- | --- | --- | --- | --- | --- |
| 1 | Site Possession & Mobilisation |  | 8d | 2027-03-01 | 2027-03-10 |  | 0d | Preliminaries [256 h] |  |
| 2 | Hoarding, Setting Out & Temporary Services |  | 5d | 2027-03-04 | 2027-03-10 | 1 SS+3d | 0d | Preliminaries [160 h] |  |
| 3 | Bulk Excavation |  | 6d | 2027-03-09 | 2027-03-16 | 2 SS+3d | 0d | Groundworks [144 h] | 18,000 |
| 4 | Foundation Works (Strip Footings) |  | 10d | 2027-03-16 | 2027-03-29 | 3 SS+5d | 0d | Groundworks [480 h] | 52,000 |
| 6 | Substructure Drainage & Ground Services |  | 8d | 2027-03-17 | 2027-03-26 | 3 | 0d | Groundworks [256 h] | 25,000 |
| 5 | Ground Beams & Plinth |  | 6d | 2027-03-19 | 2027-03-26 | 4 SS+3d | 0d | Groundworks [288 h] | 38,000 |
| 7 | Ground Floor Slab (DPM, Insulation, Concrete) |  | 5d | 2027-03-29 | 2027-04-02 | 5, 6 | 0d | Groundworks [240 h] | 45,000 |
| 8 | GF Columns & Shear Walls |  | 4d | 2027-04-07 | 2027-04-12 | 7 FS+2d | 0d | Concrete Frame [256 h] | 55,000 |
| 9 | GF Beam & Slab (1F Floor) |  | 5d | 2027-04-13 | 2027-04-19 | 8 | 0d | Concrete Frame [320 h] | 75,000 |
| 10 | 1F Columns & Shear Walls |  | 4d | 2027-04-20 | 2027-04-23 | 9 | 0d | Concrete Frame [256 h] | 55,000 |
| 14 | GF Brick External Walls |  | 10d | 2027-04-20 | 2027-05-03 | 9 | 14d | Brickwork [320 h] | 44,000 |
| 20 | GF Internal Blockwork Partitions |  | 4d | 2027-04-20 | 2027-04-23 | 9 | 12d | Internal Trade [128 h] | 18,000 |
| 11 | 1F Beam & Slab (2F Floor) |  | 5d | 2027-04-26 | 2027-04-30 | 10 | 0d | Concrete Frame [320 h] | 75,000 |
| 23 | GF 1st Fix M&E |  | 5d | 2027-04-26 | 2027-04-30 | 20 | 16d | M&E [160 h] | 32,000 |
| 12 | 2F Columns & Shear Walls |  | 4d | 2027-05-03 | 2027-05-06 | 11 | 0d | Concrete Frame [256 h] | 55,000 |
| 21 | 1F Internal Blockwork Partitions |  | 4d | 2027-05-03 | 2027-05-06 | 11, 20 SS+3d | 6d | Internal Trade [128 h] | 18,000 |
| 26 | GF Insulation & Dry Lining |  | 4d | 2027-05-03 | 2027-05-06 | 23 | 16d | Internal Trade [128 h] | 16,000 |
| 15 | 1F Brick External Walls |  | 10d | 2027-05-04 | 2027-05-17 | 11, 14 | 15d | Brickwork [320 h] | 44,000 |
| 17 | Windows & External Doors |  | 8d | 2027-05-04 | 2027-05-13 | 14 | 14d | Brickwork [192 h] | 60,000 |
| 13 | Roof Slab & Parapet Walls |  | 5d | 2027-05-07 | 2027-05-13 | 12 | 0d | Concrete Frame [320 h] | 70,000 |
| 24 | 1F 1st Fix M&E |  | 5d | 2027-05-07 | 2027-05-13 | 21, 23 SS | 7d | M&E [160 h] | 32,000 |
| 29 | GF Plastering |  | 4d | 2027-05-07 | 2027-05-12 | 26 | 16d | Internal Trade [96 h] | 14,000 |
| 32 | GF 2nd Fix M&E |  | 4d | 2027-05-13 | 2027-05-18 | 29 | 16d | M&E [128 h] | 28,000 |
| 18 | Flat Roof Construction |  | 8d | 2027-05-14 | 2027-05-25 | 13 | 13d | Roofing [256 h] | 42,000 |
| 22 | 2F Internal Blockwork Partitions |  | 4d | 2027-05-14 | 2027-05-19 | 13, 21 SS+3d | 0d | Internal Trade [128 h] | 18,000 |
| 27 | 1F Insulation & Dry Lining |  | 4d | 2027-05-14 | 2027-05-19 | 24, 26 SS | 7d | Internal Trade [128 h] | 16,000 |
| 44 | External Paving, Paths & Car Park |  | 8d | 2027-05-14 | 2027-05-25 | 17 | 14d | External Works [256 h] | 35,000 |
| 16 | 2F Brick External Walls |  | 10d | 2027-05-18 | 2027-05-31 | 13, 15 | 15d | Brickwork [320 h] | 44,000 |
| 35 | GF Floor & Wall Tiling |  | 3d | 2027-05-19 | 2027-05-21 | 32 | 16d | Finishes [48 h] | 12,000 |
| 25 | 2F 1st Fix M&E |  | 5d | 2027-05-20 | 2027-05-26 | 22, 24 SS | 0d | M&E [160 h] | 32,000 |
| 30 | 1F Plastering |  | 4d | 2027-05-20 | 2027-05-25 | 27, 29 SS | 7d | Internal Trade [96 h] | 14,000 |
| 38 | Kitchen & Bathroom Fit-out (GF) |  | 3d | 2027-05-24 | 2027-05-26 | 35 | 16d | Finishes [72 h] | 24,000 |
| 19 | Roof Covering & Flashings |  | 6d | 2027-05-26 | 2027-06-02 | 18 | 13d | Roofing [144 h] | 18,000 |
| 33 | 1F 2nd Fix M&E |  | 4d | 2027-05-26 | 2027-05-31 | 30, 32 SS | 7d | M&E [128 h] | 28,000 |
| 45 | Soft Landscaping & Boundary Treatment |  | 5d | 2027-05-26 | 2027-06-01 | 44 | 14d | External Works [120 h] | 15,000 |
| 46 | External Lighting & Services Connection |  | 5d | 2027-05-26 | 2027-06-01 | 44, 45 SS | 14d | M&E [120 h] | 12,000 |
| 28 | 2F Insulation & Dry Lining |  | 4d | 2027-05-27 | 2027-06-01 | 25, 27 SS | 0d | Internal Trade [128 h] | 16,000 |
| 41 | Internal Decoration (GF) |  | 4d | 2027-05-27 | 2027-06-01 | 38 | 16d | Finishes [96 h] | 10,000 |
| 36 | 1F Floor & Wall Tiling |  | 3d | 2027-06-01 | 2027-06-03 | 33, 35 SS | 7d | Finishes [48 h] | 12,000 |
| 31 | 2F Plastering |  | 4d | 2027-06-02 | 2027-06-07 | 28, 30 SS | 0d | Internal Trade [96 h] | 14,000 |
| 39 | Kitchen & Bathroom Fit-out (1F) |  | 3d | 2027-06-04 | 2027-06-08 | 36, 38 SS | 7d | Finishes [72 h] | 24,000 |
| 34 | 2F 2nd Fix M&E |  | 4d | 2027-06-08 | 2027-06-11 | 31, 33 SS | 0d | M&E [128 h] | 28,000 |
| 42 | Internal Decoration (1F) |  | 4d | 2027-06-09 | 2027-06-14 | 39, 41 SS | 7d | Finishes [96 h] | 10,000 |
| 37 | 2F Floor & Wall Tiling |  | 3d | 2027-06-14 | 2027-06-16 | 34, 36 SS | 0d | Finishes [48 h] | 12,000 |
| 40 | Kitchen & Bathroom Fit-out (2F) |  | 3d | 2027-06-17 | 2027-06-21 | 37, 39 SS | 0d | Finishes [72 h] | 24,000 |
| 43 | Internal Decoration (2F) |  | 4d | 2027-06-18 | 2027-06-23 | 40 SS+1d, 42 SS | 0d | Finishes [96 h] | 10,000 |
| 47 | Snagging & Defect Rectification |  | 8d | 2027-06-22 | 2027-07-01 | 43 SS+2d, 16, 19, 45, 46 | 0d | Internal Trade [256 h] | 8,000 |
| 48 | Final Commissioning & Testing |  | 5d | 2027-06-25 | 2027-07-01 | 47 SS+3d | 0d | M&E [120 h] | 10,000 |
| 49 | Handover Documentation & O&M Manuals |  | 3d | 2027-07-02 | 2027-07-06 | 48 | 0d | Preliminaries [48 h] |  |
| 50 | PRACTICAL COMPLETION | milestone | 0d | 2027-07-07 | 2027-07-07 | 49 | 0d |  |  |

Notes:
- 3: Expenses: Bulk Excavation — Materials/Plant/Sublet 18000
- 4: Expenses: Foundation Works (Strip Footings) — Materials/Plant/Sublet 52000
- 6: Expenses: Substructure Drainage & Ground Services — Materials/Plant/Sublet 25000
- 5: Expenses: Ground Beams & Plinth — Materials/Plant/Sublet 38000
- 7: Expenses: Ground Floor Slab (DPM, Insulation, Concrete) — Materials/Plant/Sublet 45000
- 8: Expenses: GF Columns & Shear Walls — Materials/Plant/Sublet 55000
- 9: Expenses: GF Beam & Slab (1F Floor) — Materials/Plant/Sublet 75000
- 10: Expenses: 1F Columns & Shear Walls — Materials/Plant/Sublet 55000
- 14: Expenses: GF Brick External Walls — Materials/Plant/Sublet 44000
- 20: Expenses: GF Internal Blockwork Partitions — Materials/Plant/Sublet 18000
- 11: Expenses: 1F Beam & Slab (2F Floor) — Materials/Plant/Sublet 75000
- 23: Expenses: GF 1st Fix M&E — Materials/Plant/Sublet 32000
- 12: Expenses: 2F Columns & Shear Walls — Materials/Plant/Sublet 55000
- 21: Expenses: 1F Internal Blockwork Partitions — Materials/Plant/Sublet 18000
- 26: Expenses: GF Insulation & Dry Lining — Materials/Plant/Sublet 16000
- 15: Expenses: 1F Brick External Walls — Materials/Plant/Sublet 44000
- 17: Expenses: Windows & External Doors — Materials/Plant/Sublet 60000
- 13: Expenses: Roof Slab & Parapet Walls — Materials/Plant/Sublet 70000
- 24: Expenses: 1F 1st Fix M&E — Materials/Plant/Sublet 32000
- 29: Expenses: GF Plastering — Materials/Plant/Sublet 14000
- 32: Expenses: GF 2nd Fix M&E — Materials/Plant/Sublet 28000
- 18: Expenses: Flat Roof Construction — Materials/Plant/Sublet 42000
- 22: Expenses: 2F Internal Blockwork Partitions — Materials/Plant/Sublet 18000
- 27: Expenses: 1F Insulation & Dry Lining — Materials/Plant/Sublet 16000
- 44: Expenses: External Paving, Paths & Car Park — Materials/Plant/Sublet 35000
- 16: Expenses: 2F Brick External Walls — Materials/Plant/Sublet 44000
- 35: Expenses: GF Floor & Wall Tiling — Materials/Plant/Sublet 12000
- 25: Expenses: 2F 1st Fix M&E — Materials/Plant/Sublet 32000
- 30: Expenses: 1F Plastering — Materials/Plant/Sublet 14000
- 38: Expenses: Kitchen & Bathroom Fit-out (GF) — Materials/Plant/Sublet 24000
- 19: Expenses: Roof Covering & Flashings — Materials/Plant/Sublet 18000
- 33: Expenses: 1F 2nd Fix M&E — Materials/Plant/Sublet 28000
- 45: Expenses: Soft Landscaping & Boundary Treatment — Materials/Plant/Sublet 15000
- 46: Expenses: External Lighting & Services Connection — Materials/Plant/Sublet 12000
- 28: Expenses: 2F Insulation & Dry Lining — Materials/Plant/Sublet 16000
- 41: Expenses: Internal Decoration (GF) — Materials/Plant/Sublet 10000
- 36: Expenses: 1F Floor & Wall Tiling — Materials/Plant/Sublet 12000
- 31: Expenses: 2F Plastering — Materials/Plant/Sublet 14000
- 39: Expenses: Kitchen & Bathroom Fit-out (1F) — Materials/Plant/Sublet 24000
- 34: Expenses: 2F 2nd Fix M&E — Materials/Plant/Sublet 28000
- 42: Expenses: Internal Decoration (1F) — Materials/Plant/Sublet 10000
- 37: Expenses: 2F Floor & Wall Tiling — Materials/Plant/Sublet 12000
- 40: Expenses: Kitchen & Bathroom Fit-out (2F) — Materials/Plant/Sublet 24000
- 43: Expenses: Internal Decoration (2F) — Materials/Plant/Sublet 10000
- 47: Expenses: Snagging & Defect Rectification — Materials/Plant/Sublet 8000
- 48: Expenses: Final Commissioning & Testing — Materials/Plant/Sublet 10000
