# Aurora Tower

Schedule from Primavera P6, 2026-06-22 to 2029-08-21.
Must finish by 2029-08-21

## Schedule

| ID | Activity | Type | Duration | Start | Finish | Predecessors | Total float |
| --- | --- | --- | --- | --- | --- | --- | --- |
| 1 | Design Team Mobilization |  | 10d | 2026-06-22 | 2026-07-03 |  | 0d |
| 109 | Lifts & Vertical Transport | milestone | 0d | 2026-06-22 | 2026-06-22 |  | 826d |
| 113 | Internal Fit-Out | milestone | 0d | 2026-06-22 | 2026-06-22 |  | 826d |
| 119 | External Works & Landscaping | milestone | 0d | 2026-06-22 | 2026-06-22 |  | 826d |
| 123 | Commissioning, Testing & Handover | milestone | 0d | 2026-06-22 | 2026-06-22 |  | 826d |
| 81 | Site Preparation & Substructure | milestone | 0d | 2026-06-22 | 2026-06-22 |  | 826d |
| 86 | Superstructure — Precast Frame & Cores | milestone | 0d | 2026-06-22 | 2026-06-22 |  | 826d |
| 93 | Building Envelope — Facade | milestone | 0d | 2026-06-22 | 2026-06-22 |  | 826d |
| 99 | MEP Services | milestone | 0d | 2026-06-22 | 2026-06-22 |  | 826d |
| 12 | Concept Design |  | 15d | 2026-07-06 | 2026-07-24 | 1 | 0d |
| 2 | Pre-Application Meeting with City Planning Authority |  | 3d | 2026-07-06 | 2026-07-08 | 1 | 81d |
| 9 | Topographic Survey & Geotechnical Investigation |  | 15d | 2026-07-06 | 2026-07-24 | 1 | 778d |
| 3 | Building Permit Application Preparation & Submission |  | 20d | 2026-07-09 | 2026-08-05 | 2 | 81d |
| 7 | Fire Authority & Environmental Submissions |  | 15d | 2026-07-09 | 2026-07-29 | 2 | 798d |
| 10 | M: Geotechnical Report Submitted to Design Team | milestone | 0d | 2026-07-27 | 2026-07-27 | 9 | 778d |
| 11 | Foundation Recommendation Review & Confirmation |  | 5d | 2026-07-27 | 2026-07-31 | 10 | 778d |
| 13 | Schematic Design |  | 25d | 2026-07-27 | 2026-08-28 | 12 | 0d |
| 24 | Structural System Concept & Selection |  | 5d | 2026-07-27 | 2026-07-31 | 12 | 60d |
| 52 | Site Grading, Drainage & Stormwater Design |  | 8d | 2026-07-27 | 2026-08-05 | 9, 12 | 778d |
| 63 | Architectural BIM Model Development |  | 20d | 2026-07-27 | 2026-08-21 | 12 | 80d |
| 8 | M: Fire Authority Approval Received | milestone | 0d | 2026-07-30 | 2026-07-30 | 7 | 798d |
| 25 | Foundation System Design |  | 10d | 2026-08-03 | 2026-08-14 | 11, 24 | 778d |
| 4 | M: Permit Application Submitted | milestone | 0d | 2026-08-06 | 2026-08-06 | 3 | 81d |
| 5 | Authority Review & Condition Response |  | 40d | 2026-08-06 | 2026-09-30 | 4 | 81d |
| 53 | Parking, Driveways & Access Road Design |  | 5d | 2026-08-06 | 2026-08-12 | 52 | 778d |
| 55 | Landscaping & External Lighting Design |  | 5d | 2026-08-13 | 2026-08-19 | 53 | 778d |
| 26 | Basement & Retaining Structure Design |  | 8d | 2026-08-17 | 2026-08-26 | 25 | 778d |
| 14 | M: Schematic Design — Authority Submission | milestone | 0d | 2026-08-31 | 2026-08-31 | 13 | 776d |
| 15 | Design Development / Detailed Design |  | 30d | 2026-08-31 | 2026-10-09 | 13 | 0d |
| 19 | Interior Space Planning & Layout |  | 20d | 2026-08-31 | 2026-09-25 | 13 | 741d |
| 34 | Heating & Cooling Load Analysis |  | 8d | 2026-08-31 | 2026-09-09 | 13 | 29d |
| 43 | Power Demand Assessment & Utility Connection Design |  | 5d | 2026-08-31 | 2026-09-04 | 13 | 745d |
| 45 | Lighting Design |  | 8d | 2026-08-31 | 2026-09-09 | 13 | 760d |
| 46 | Fire Alarm & Detection System Design |  | 5d | 2026-08-31 | 2026-09-04 | 13 | 763d |
| 47 | Security, Access Control & CCTV Design |  | 5d | 2026-08-31 | 2026-09-04 | 13 | 763d |
| 48 | Data, Communications & AV Design |  | 5d | 2026-08-31 | 2026-09-04 | 13 | 763d |
| 44 | MV/LV Power Distribution Design |  | 8d | 2026-09-07 | 2026-09-16 | 43 | 745d |
| 35 | District Heating Connection Design |  | 5d | 2026-09-10 | 2026-09-16 | 34 | 753d |
| 36 | Mechanical Ventilation System Design |  | 10d | 2026-09-10 | 2026-09-23 | 34 | 29d |
| 37 | Cooling System Design |  | 8d | 2026-09-10 | 2026-09-21 | 34 | 31d |
| 38 | Plumbing & Domestic Water System Design |  | 8d | 2026-09-10 | 2026-09-21 | 34 | 31d |
| 54 | Underground Utilities Routing |  | 5d | 2026-09-17 | 2026-09-23 | 35, 52 | 753d |
| 39 | Drainage & Sanitary System Design |  | 5d | 2026-09-22 | 2026-09-28 | 38 | 31d |
| 40 | Energy Performance Analysis |  | 5d | 2026-09-24 | 2026-09-30 | 34, 36, 37 | 29d |
| 56 | Civil IFC Package |  | 5d | 2026-09-24 | 2026-09-30 | 52, 53, 54, 55 | 753d |
| 20 | Material, Finish & Specification Schedule |  | 10d | 2026-09-28 | 2026-10-09 | 19 | 741d |
| 21 | Wayfinding & Signage Design |  | 5d | 2026-09-28 | 2026-10-02 | 19 | 746d |
| 41 | Mechanical IFC Package |  | 8d | 2026-10-01 | 2026-10-12 | 36, 37, 38, 39, 40 | 29d |
| 57 | M: Civil IFC Package Issued | milestone | 0d | 2026-10-01 | 2026-10-01 | 56 | 753d |
| 6 | M: Building Permit Approved | milestone | 0d | 2026-10-01 | 2026-10-01 | 5 | 81d |
| 82 | Site Clearance & Temporary Works |  | 10d | 2026-10-01 | 2026-10-14 | 6 | 81d |
| 16 | IFC Package Preparation — Architectural |  | 10d | 2026-10-12 | 2026-10-23 | 15 | 0d |
| 22 | Interior IFC Package |  | 5d | 2026-10-12 | 2026-10-16 | 20, 21 | 741d |
| 58 | Fire Safety Engineering Report |  | 10d | 2026-10-12 | 2026-10-23 | 15 | 726d |
| 59 | Acoustic & Vibration Analysis |  | 8d | 2026-10-12 | 2026-10-21 | 15 | 738d |
| 42 | M: Mechanical IFC Package Issued | milestone | 0d | 2026-10-13 | 2026-10-13 | 41 | 745d |
| 49 | Building Automation & BMS Design |  | 10d | 2026-10-13 | 2026-10-26 | 41, 44 | 727d |
| 65 | MEP BIM Model Development |  | 15d | 2026-10-13 | 2026-11-02 | 41 | 29d |
| 83 | Piling Works |  | 12d | 2026-10-15 | 2026-10-30 | 82 | 81d |
| 23 | M: Interior Design IFC Issued | milestone | 0d | 2026-10-19 | 2026-10-19 | 22 | 741d |
| 17 | M: Architectural IFC Package Issued | milestone | 0d | 2026-10-26 | 2026-10-26 | 16 | 0d |
| 18 | M: Architectural Design Freeze | milestone | 0d | 2026-10-26 | 2026-10-26 | 17 | 0d |
| 27 | Superstructure Framing Design — Precast & Cores |  | 20d | 2026-10-26 | 2026-11-20 | 24, 18 | 0d |
| 61 | Sustainability Assessment (BREEAM Excellent) |  | 10d | 2026-10-26 | 2026-11-06 | 40, 58 | 726d |
| 62 | Solar PV & Green Roof Technical Specification |  | 5d | 2026-10-26 | 2026-10-30 | 18 | 731d |
| 94 | Facade — Vendor Engineering & Shop Drawings |  | 14d | 2026-10-26 | 2026-11-12 | 18 | 362d |
| 50 | Electrical IFC Package |  | 8d | 2026-10-27 | 2026-11-05 | 44, 45, 46, 47, 48, 49 | 727d |
| 84 | Basement Excavation & Retaining Walls |  | 20d | 2026-11-02 | 2026-11-27 | 83 | 81d |
| 51 | M: Electrical IFC Package Issued | milestone | 0d | 2026-11-06 | 2026-11-06 | 50 | 727d |
| 28 | Steel Transfer Beam at Level 4 — Design |  | 10d | 2026-11-23 | 2026-12-04 | 27 | 675d |

| ID | Activity | Type | Duration | Start | Finish | Predecessors | Total float |
| --- | --- | --- | --- | --- | --- | --- | --- |
| 60 | Elevator Engineering & Specification |  | 8d | 2026-11-23 | 2026-12-02 | 27 | 708d |
| 64 | Structural BIM Model Development |  | 15d | 2026-11-23 | 2026-12-11 | 27 | 0d |
| 85 | Basement Slab & Waterproofing |  | 15d | 2026-11-30 | 2026-12-18 | 84 | 81d |
| 29 | Structural Calculations & FEM Analysis |  | 15d | 2026-12-07 | 2026-12-25 | 27, 28 | 675d |
| 66 | Multi-Discipline Clash Detection & Coordination |  | 10d | 2026-12-14 | 2026-12-25 | 63, 64, 65 | 0d |
| 120 | External Drainage, Stormwater & Utility Connections |  | 30d | 2026-12-21 | 2027-01-29 | 85 | 611d |
| 30 | M: Structural Calculations Complete | milestone | 0d | 2026-12-28 | 2026-12-28 | 29 | 683d |
| 31 | Precast Concrete & Prefab Element Specifications |  | 8d | 2026-12-28 | 2027-01-06 | 29 | 675d |
| 67 | 4D BIM Schedule Integration |  | 5d | 2026-12-28 | 2027-01-01 | 66 | 686d |
| 68 | Model-Based Quantity Take-Off for Procurement |  | 8d | 2026-12-28 | 2027-01-06 | 66 | 678d |
| 69 | M: Coordinated BIM Model Issued for Construction | milestone | 0d | 2026-12-28 | 2026-12-28 | 66 | 0d |
| 71 | Approved Vendor List Compilation |  | 5d | 2026-12-28 | 2027-01-01 | 69 | 0d |
| 72 | VDRL Compilation |  | 3d | 2027-01-04 | 2027-01-06 | 71 | 0d |
| 32 | Structural IFC Package |  | 8d | 2027-01-07 | 2027-01-18 | 31, 30 | 675d |
| 70 | MTO Finalization from BIM Model |  | 5d | 2027-01-07 | 2027-01-13 | 68 | 678d |
| 73 | M: Procurement Packages Issued | milestone | 0d | 2027-01-07 | 2027-01-07 | 72 | 0d |
| 74 | Structural Steel — Tender & Vendor Evaluation |  | 15d | 2027-01-07 | 2027-01-27 | 73 | 0d |
| 80 | Long-Lead Procurement — Precast Elements |  | 60d | 2027-01-07 | 2027-03-31 | 73 | 623d |
| 33 | M: Structural IFC Package Issued | milestone | 0d | 2027-01-19 | 2027-01-19 | 32 | 675d |
| 75 | M: Structural Steel — Vendor Award | milestone | 0d | 2027-01-28 | 2027-01-28 | 74 | 0d |
| 76 | Structural Steel — Shop Drawing Submission & Approval |  | 15d | 2027-01-28 | 2027-02-17 | 75 | 0d |
| 121 | Parking, Driveways & Hardstanding |  | 25d | 2027-02-01 | 2027-03-05 | 120 | 611d |
| 77 | Structural Steel — Fabrication |  | 30d | 2027-02-18 | 2027-03-31 | 76 | 0d |
| 122 | Landscaping, Planting & External Lighting |  | 20d | 2027-03-08 | 2027-04-02 | 121 | 611d |
| 78 | Structural Steel — Third-Party Inspection |  | 5d | 2027-04-01 | 2027-04-07 | 77 | 0d |
| 79 | Structural Steel — Delivery to Site |  | 3d | 2027-04-08 | 2027-04-12 | 78 | 0d |
| 87 | RC Core Walls — Jump Form (All Floors) |  | 100d | 2027-04-13 | 2027-08-30 | 85, 79 | 0d |
| 88 | Precast Column Installation (All Floors) |  | 60d | 2027-08-31 | 2027-11-22 | 87 | 0d |
| 89 | Precast Inverted-T Beams & Hollow-Core Planks |  | 70d | 2027-11-23 | 2028-02-28 | 88 | 0d |
| 100 | HVAC Ductwork — Lower Floors (1-6) |  | 80d | 2028-02-29 | 2028-06-19 | 89, 87 | 145d |
| 101 | HVAC Ductwork — Upper Floors (7-13) |  | 70d | 2028-02-29 | 2028-06-05 | 89, 87 | 155d |
| 102 | Pipework & Plumbing Risers |  | 90d | 2028-02-29 | 2028-07-03 | 89, 87 | 295d |
| 102 | Pipework & Plumbing Risers |  | 90d | 2028-02-29 | 2028-07-03 | 89, 87 | 295d |
| 103 | Sprinkler System Installation |  | 80d | 2028-02-29 | 2028-06-19 | 89, 87 | 280d |
| 104 | Electrical Cable Trays, Conduits & Containment |  | 70d | 2028-02-29 | 2028-06-05 | 89, 87 | 205d |
| 110 | Lift Shaft Preparation & Brackets |  | 20d | 2028-02-29 | 2028-03-27 | 87, 89 | 260d |
| 90 | In-Situ Concrete Topping Pours |  | 25d | 2028-02-29 | 2028-04-03 | 89 | 0d |
| 91 | Steel Transfer Beam Erection at Level 4 |  | 5d | 2028-02-29 | 2028-03-06 | 87, 89 | 20d |
| 111 | Lift Car & Rail Installation (3 passenger + 1 goods) |  | 60d | 2028-03-28 | 2028-06-19 | 110 | 260d |
| 92 | M: Structural Topping Out | milestone | 0d | 2028-04-04 | 2028-04-04 | 89, 90, 91 | 0d |
| 95 | Ventilated Rain-Screen South Elevation (1,840 m²) |  | 70d | 2028-04-04 | 2028-07-10 | 94, 92 | 10d |
| 96 | EIFS North/East/West (4,500 m²) |  | 80d | 2028-04-04 | 2028-07-24 | 94, 92 | 0d |
| 97 | Triple-Glazed Aluminium Windows (2,800 m²) |  | 60d | 2028-04-04 | 2028-06-26 | 94, 92 | 20d |
| 105 | MV/LV Power Distribution & Final Connections |  | 80d | 2028-06-06 | 2028-09-25 | 104 | 205d |
| 106 | DALI LED Lighting Installation |  | 60d | 2028-06-06 | 2028-08-28 | 104 | 255d |
| 107 | Fire Alarm & Detection System Installation |  | 40d | 2028-06-06 | 2028-07-31 | 104 | 235d |
| 108 | BMS/BAS System Installation & Wiring |  | 50d | 2028-06-06 | 2028-08-14 | 104 | 235d |
| 112 | Lift Commissioning & Testing |  | 15d | 2028-06-20 | 2028-07-10 | 111 | 260d |
| 127 | Sprinkler System Pressure & Flow Testing |  | 5d | 2028-06-20 | 2028-06-26 | 103 | 280d |
| 114 | Raised Access Floors Installation |  | 50d | 2028-07-25 | 2028-10-02 | 90, 98 | 0d |
| 98 | M: Building Weathertight | milestone | 0d | 2028-07-25 | 2028-07-25 | 95, 96, 97 | 0d |
| 125 | Fire Alarm & Life Safety Systems Testing |  | 10d | 2028-08-01 | 2028-08-14 | 107 | 235d |
| 115 | Drylining & Internal Partitions |  | 70d | 2028-10-03 | 2029-01-08 | 114 | 0d |
| 116 | Suspended Ceilings Installation |  | 60d | 2029-01-09 | 2029-04-02 | 115, 100, 101 | 0d |
| 117 | MEP Terminals, Grilles & Diffusers Installation |  | 40d | 2029-04-03 | 2029-05-28 | 116, 100, 101 | 0d |
| 118 | Final Finishes, Painting & Flooring |  | 50d | 2029-05-29 | 2029-08-06 | 115, 116, 117 | 0d |
| 124 | HVAC Commissioning, Balancing & Air Volume Testing |  | 15d | 2029-05-29 | 2029-06-18 | 101, 117 | 15d |
| 126 | BMS/BAS Integrated Functional Testing |  | 10d | 2029-06-19 | 2029-07-02 | 108, 124, 125, 112, 105 | 15d |
| 129 | Documentation, O&M Manuals & Handover |  | 20d | 2029-07-03 | 2029-07-30 | 126, 124, 125, 127 | 15d |
| 128 | Authority Final Inspection & Occupancy Permit |  | 10d | 2029-08-07 | 2029-08-20 | 126, 124, 125, 127, 118, 122 | 0d |
| 130 | M: Practical Completion | milestone | 0d | 2029-08-21 | 2029-08-21 | 128, 129 | 0d |
| 131 | M: Occupancy Inspection (Käyttöönottotarkastus) | milestone | 0d | 2029-08-21 | 2029-08-21 | 130 | 0d |
