# Aurora Tower

Schedule from Primavera P6, 2025-08-01 to 2028-10-02.
Must finish by 2028-10-02

## Schedule

| ID | Activity | Type | Duration | Start | Finish | Predecessors | Total float |
| --- | --- | --- | --- | --- | --- | --- | --- |
| 1 | Design Team Mobilization |  | 10d | 2025-08-01 | 2025-08-14 | 303 | 0d |
| 303 | PROJECT START - NTP & Commencement | milestone | 0d | 2025-08-01 | 2025-08-01 |  | 0d |
| 2 | Pre-Application Meeting with City Planning Authority |  | 3d | 2025-08-15 | 2025-08-19 | 1 | 12d |
| 3 | Topographic Survey & Geotechnical Investigation |  | 15d | 2025-08-15 | 2025-09-04 | 1 | 0d |
| 4 | Foundation Recommendation Review & Confirmation |  | 5d | 2025-09-05 | 2025-09-11 | 3 | 786d |
| 5 | Concept Design |  | 15d | 2025-09-05 | 2025-09-25 | 2, 3 | 0d |
| 12 | Structural System Concept & Selection |  | 5d | 2025-09-26 | 2025-10-02 | 5 | 76d |
| 6 | Schematic Design |  | 25d | 2025-09-26 | 2025-10-30 | 5 | 0d |
| 13 | Foundation System Design |  | 10d | 2025-10-03 | 2025-10-16 | 12, 4 | 771d |
| 15 | Superstructure Framing Design |  | 20d | 2025-10-03 | 2025-10-30 | 12 | 76d |
| 16 | Precast Concrete & Prefab Element Specifications |  | 8d | 2025-10-31 | 2025-11-11 | 15 | 106d |
| 17 | Structural Calculations & FEM Analysis |  | 15d | 2025-10-31 | 2025-11-20 | 15 | 99d |
| 46 | Structural BIM Model Development |  | 15d | 2025-10-31 | 2025-11-20 | 15 | 76d |
| 7 | Design Development / Detailed Design |  | 30d | 2025-10-31 | 2025-12-11 | 6 | 0d |
| 18 | Structural IFC Package |  | 8d | 2025-11-21 | 2025-12-02 | 16, 17 | 99d |
| 19 | Heating & Cooling Load Analysis |  | 8d | 2025-12-12 | 2025-12-23 | 7 | 25d |
| 27 | Power Demand Assessment & Utility Connection Design |  | 5d | 2025-12-12 | 2025-12-18 | 7 | 0d |
| 35 | Site Grading, Drainage & Stormwater Design |  | 8d | 2025-12-12 | 2025-12-23 | 7 | 69d |
| 40 | Fire Safety Engineering Report |  | 10d | 2025-12-12 | 2025-12-25 | 7 | 59d |
| 42 | Elevator Engineering & Specification |  | 8d | 2025-12-12 | 2025-12-23 | 7 | 84d |
| 45 | Architectural BIM Model Development |  | 20d | 2025-12-12 | 2026-01-08 | 7 | 41d |
| 8 | Interior Space Planning & Layout |  | 20d | 2025-12-12 | 2026-01-08 | 7 | 696d |
| 28 | MV/LV Power Distribution Design |  | 8d | 2025-12-19 | 2025-12-30 | 27 | 0d |
| 20 | District Heating Connection Design |  | 5d | 2025-12-24 | 2025-12-30 | 19 | 71d |
| 21 | Mechanical Ventilation System Design |  | 10d | 2025-12-24 | 2026-01-06 | 19 | 28d |
| 22 | Cooling System Design |  | 8d | 2025-12-24 | 2026-01-02 | 19 | 30d |
| 23 | Plumbing & Domestic Water System Design |  | 8d | 2025-12-24 | 2026-01-02 | 19 | 25d |
| 36 | Parking, Driveways & Access Road Design |  | 5d | 2025-12-24 | 2025-12-30 | 35 | 69d |
| 37 | Underground Utilities Routing |  | 5d | 2025-12-24 | 2025-12-30 | 35 | 69d |
| 41 | Acoustic & Vibration Analysis |  | 8d | 2025-12-26 | 2026-01-06 | 40 | 59d |
| 14 | Basement & Retaining Structure Design |  | 8d | 2025-12-31 | 2026-01-09 | 28 | 710d |
| 29 | Lighting Design |  | 8d | 2025-12-31 | 2026-01-09 | 28 | 0d |
| 38 | Landscaping & External Lighting Design |  | 5d | 2025-12-31 | 2026-01-06 | 36, 37 | 69d |
| 24 | Drainage & Sanitary System Design |  | 5d | 2026-01-05 | 2026-01-09 | 23 | 25d |
| 25 | Energy Performance Analysis |  | 5d | 2026-01-07 | 2026-01-13 | 21, 22, 23 | 54d |
| 39 | Civil IFC Package |  | 5d | 2026-01-07 | 2026-01-13 | 38 | 69d |
| 55 | Fire Authority & Environmental Submissions |  | 15d | 2026-01-07 | 2026-01-27 | 41 | 59d |
| 54 | IFC Package Preparation — Architectural |  | 10d | 2026-01-09 | 2026-01-22 | 45 | 62d |
| 9 | Material, Finish & Specification Schedule |  | 10d | 2026-01-09 | 2026-01-22 | 8 | 696d |
| 30 | Fire Alarm & Detection System Design |  | 5d | 2026-01-12 | 2026-01-16 | 29 | 0d |
| 26 | Mechanical IFC Package |  | 8d | 2026-01-14 | 2026-01-23 | 20, 24, 25 | 61d |
| 43 | Sustainability Assessment |  | 10d | 2026-01-14 | 2026-01-27 | 25 | 54d |
| 31 | Security, Access Control & CCTV Design |  | 5d | 2026-01-19 | 2026-01-23 | 30 | 0d |
| 10 | Wayfinding & Signage Design |  | 5d | 2026-01-23 | 2026-01-29 | 9 | 696d |
| 11 | Interior IFC Package |  | 5d | 2026-01-23 | 2026-01-29 | 9 | 696d |
| 32 | Data, Communications & AV Design |  | 5d | 2026-01-26 | 2026-01-30 | 31 | 0d |
| 44 | Solar PV & Green Roof Technical Specification |  | 5d | 2026-01-28 | 2026-02-03 | 43 | 54d |
| 33 | Building Automation & BMS Design |  | 10d | 2026-02-02 | 2026-02-13 | 32 | 0d |
| 34 | Electrical IFC Package |  | 8d | 2026-02-16 | 2026-02-25 | 33 | 38d |
| 47 | MEP BIM Model Development |  | 15d | 2026-02-16 | 2026-03-06 | 21, 22, 24, 33 | 0d |
| 48 | Multi-Discipline Clash Detection & Coordination |  | 10d | 2026-03-09 | 2026-03-20 | 45, 46, 47 | 0d |
| 49 | 4D BIM Schedule Integration |  | 5d | 2026-03-23 | 2026-03-27 | 48 | 16d |
| 50 | Model-Based Quantity Take-Off (MTO) for Procurement |  | 8d | 2026-03-23 | 2026-04-01 | 48 | 0d |
| 51 | MTO Finalization from BIM Model |  | 5d | 2026-04-02 | 2026-04-08 | 50 | 0d |
| 52 | Approved Vendor List Compilation |  | 5d | 2026-04-09 | 2026-04-15 | 51 | 0d |
| 53 | VDRL Compilation |  | 3d | 2026-04-16 | 2026-04-20 | 52 | 0d |
| 56 | Building Permit Application Preparation & Submission |  | 20d | 2026-04-21 | 2026-05-18 | 54, 18, 26, 34, 39, 42, 44, 49, 53, 55 | 0d |
| 57 | Authority Review & Condition Response |  | 40d | 2026-05-19 | 2026-07-13 | 56 | 0d |
| 304 | MILESTONE: Design & Approvals Complete | milestone | 0d | 2026-07-14 | 2026-07-14 | 57 | 0d |
| 58 | Site Handover from Client & Boundary Survey |  | 3d | 2026-07-14 | 2026-07-16 | 304 | 0d |
| 59 | Temporary Site Facilities Setup |  | 5d | 2026-07-17 | 2026-07-23 | 58 | 0d |
| 62 | Shipping & Logistics Coordination |  | 10d | 2026-07-17 | 2026-07-30 | 58 | 0d |
| 60 | Tower Crane Erection & Commissioning |  | 10d | 2026-07-24 | 2026-08-06 | 59 | 561d |
| 61 | Key Subcontractor Mobilization |  | 5d | 2026-07-24 | 2026-07-30 | 59 | 0d |
| 63 | Site Receiving, Inspection & Storage |  | 15d | 2026-07-31 | 2026-08-20 | 61, 62 | 0d |
| 305 | MILESTONE: Site Mobilization Complete | milestone | 0d | 2026-08-21 | 2026-08-21 | 63 | 0d |
| 64 | Piling Works |  | 30d | 2026-08-21 | 2026-10-01 | 63, 305 | 0d |
| 65 | Piling Load Testing & Inspection |  | 5d | 2026-10-02 | 2026-10-08 | 64 | 0d |
| 66 | Sheet Pile / Soldier Pile Shoring Installation |  | 15d | 2026-10-07 | 2026-10-27 | 65 SS+3d | 0d |
| 67 | Dewatering System Installation |  | 3d | 2026-10-12 | 2026-10-14 | 66 SS+3d | 0d |

| ID | Activity | Type | Duration | Start | Finish | Predecessors | Total float |
| --- | --- | --- | --- | --- | --- | --- | --- |
| 68 | Stage 1 Excavation — to Basement Level 1 Formation |  | 15d | 2026-10-15 | 2026-11-04 | 67 SS+3d | 0d |
| 69 | Stage 1 Propping — Level 1 Waler & Props |  | 5d | 2026-10-20 | 2026-10-26 | 68 SS+3d | 0d |
| 70 | Stage 2 Excavation — to Basement Level 2 Formation |  | 15d | 2026-10-27 | 2026-11-16 | 69 | 0d |
| 71 | Stage 2 Propping — Level 2 Waler & Props |  | 4d | 2026-11-17 | 2026-11-20 | 70 | 0d |
| 72 | Formation Level Preparation & Blinding |  | 4d | 2026-11-23 | 2026-11-26 | 71 | 0d |
| 73 | Foundation Waterproofing & Drainage Layer |  | 5d | 2026-11-27 | 2026-12-03 | 72 | 0d |
| 74 | Pile Caps & Ground Beams |  | 10d | 2026-12-04 | 2026-12-17 | 73 | 0d |
| 75 | Basement Level 2 Slab — Formwork, Rebar & Concrete |  | 10d | 2026-12-18 | 2026-12-31 | 74 | 0d |
| 76 | Basement Level 2 RC Walls & Columns |  | 12d | 2027-01-01 | 2027-01-18 | 75 | 0d |
| 77 | Basement Level 2 Waterproofing — Slab & Walls |  | 8d | 2027-01-19 | 2027-01-28 | 76 | 0d |
| 78 | Basement Level 1 Slab — Formwork, Rebar & Concrete |  | 12d | 2027-01-29 | 2027-02-15 | 77 | 0d |
| 79 | Basement Level 1 RC Walls & Columns |  | 10d | 2027-02-16 | 2027-03-01 | 78 | 0d |
| 80 | Basement Level 1 Waterproofing — Slab & Walls |  | 8d | 2027-03-02 | 2027-03-11 | 79 | 0d |
| 81 | Ground Floor Slab (Substructure Interface) |  | 8d | 2027-03-12 | 2027-03-23 | 80 | 0d |
| 306 | MILESTONE: Substructure Complete | milestone | 0d | 2027-03-24 | 2027-03-24 | 81 | 0d |
| 82 | Ground Floor Slab & Podium Structure |  | 8d | 2027-03-24 | 2027-04-02 | 306 | 0d |
| 83 | Concrete Core Walls – Progressive Floors |  | 50d | 2027-04-05 | 2027-06-11 | 82 | 0d |
| 294 | Core Wall Construction - Floors 5-6 |  | 5d | 2027-06-14 | 2027-06-18 | 83 | 215d |
| 84 | Structural Frame – Floors 1 to N (RC Columns & Precast Spine Beams) |  | 45d | 2027-06-14 | 2027-08-13 | 83 | 0d |
| 295 | Core Wall Construction - Floors 7-8 |  | 5d | 2027-06-16 | 2027-06-22 | 294 SS+2d | 215d |
| 296 | Core Wall Construction - Floors 9-10 |  | 5d | 2027-06-18 | 2027-06-24 | 295 SS+2d | 215d |
| 297 | Core Wall Construction - Floors 11-12 |  | 5d | 2027-06-22 | 2027-06-28 | 296 SS+2d | 215d |
| 111 | Internal Doors, Frames & Hardware – Typical Floors (12 floors) |  | 6d | 2027-08-16 | 2027-08-23 | 84 | 289d |
| 114 | Raised Access Flooring – Typical Floors (12 floors) |  | 6d | 2027-08-16 | 2027-08-23 | 84 | 289d |
| 298 | Precast Frame Erection - Floors 5-6 |  | 6d | 2027-08-16 | 2027-08-23 | 84 | 169d |
| 85 | Precast Floor Plank Installation – Typical Floors |  | 30d | 2027-08-16 | 2027-09-24 | 84 | 0d |
| 299 | Precast Frame Erection - Floors 7-8 |  | 6d | 2027-08-18 | 2027-08-25 | 298 SS+2d | 169d |
| 300 | Precast Frame Erection - Floors 9-10 |  | 6d | 2027-08-20 | 2027-08-27 | 299 SS+2d | 169d |
| 301 | Precast Frame Erection - Floors 11-12 |  | 6d | 2027-08-24 | 2027-08-31 | 300 SS+2d | 169d |
| 87 | Roof Structural Frame & Penthouse |  | 10d | 2027-09-01 | 2027-09-14 | 297, 301 | 169d |
| 88 | Roof Structural Slab Construction (concrete + precast elements) |  | 10d | 2027-09-15 | 2027-09-28 | 87 | 169d |
| 86 | In-Situ Concrete Topping Pours – Typical Floors |  | 25d | 2027-09-27 | 2027-10-29 | 85 | 0d |
| 89 | Parapet Walls Construction (RC walls around roof perimeter) |  | 10d | 2027-09-29 | 2027-10-12 | 88 | 169d |
| 90 | Roof Thermal Insulation Installation (rigid board insulation) |  | 5d | 2027-09-29 | 2027-10-05 | 88 | 174d |
| 91 | Roof Waterproofing Membrane Installation (single-ply membrane system) |  | 8d | 2027-10-13 | 2027-10-22 | 89, 90 | 169d |
| 92 | Roof Drainage & Downspout Installation (gutters, downpipes, connections) |  | 5d | 2027-10-25 | 2027-10-29 | 91 | 169d |
| 106 | Internal Partition Walls – Basement Common Areas |  | 3d | 2027-11-01 | 2027-11-03 | 86 | 162d |
| 307 | MILESTONE: Roof Structure Complete | milestone | 0d | 2027-11-01 | 2027-11-01 | 92 | 240d |
| 93 | Curtain Wall & Rain-Screen Cladding Installation — Ground Floor |  | 4d | 2027-11-01 | 2027-11-04 | 86 | 0d |
| 107 | Internal Partition Walls – Ground Floor Lobby/Retail |  | 4d | 2027-11-04 | 2027-11-09 | 106 | 162d |
| 109 | Internal Doors, Frames & Hardware – Basement Common Areas |  | 2d | 2027-11-04 | 2027-11-05 | 106 | 227d |
| 112 | Raised Access Flooring – Basement Common Areas |  | 2d | 2027-11-04 | 2027-11-05 | 106 | 232d |
| 115 | Floor Screeds & Substrate Preparation – Basement Common Areas |  | 2d | 2027-11-04 | 2027-11-05 | 106 | 226d |
| 122 | Wall Finishes – Painting, Tiling & Feature Cladding – Basement Common Areas |  | 3d | 2027-11-04 | 2027-11-08 | 106 | 170d |
| 94 | Curtain Wall & Rain-Screen Cladding Installation — Floor 1 |  | 3d | 2027-11-05 | 2027-11-09 | 93 | 0d |
| 118 | Floor Finishes – Office Areas (Typical Floors only) |  | 8d | 2027-11-08 | 2027-11-17 | 109 | 227d |
| 119 | Floor Finishes – Wet Areas, Lobby & Common Areas – Basement Common Areas |  | 2d | 2027-11-08 | 2027-11-09 | 115 | 230d |
| 125 | Suspended Ceiling Systems – Basement Common Areas |  | 2d | 2027-11-09 | 2027-11-10 | 122 | 177d |
| 95 | Curtain Wall & Rain-Screen Cladding Installation — Floor 2 |  | 3d | 2027-11-09 | 2027-11-11 | 94 SS+2d | 0d |
| 108 | Internal Partition Walls – Typical Floors (12 floors) |  | 12d | 2027-11-10 | 2027-11-25 | 107 | 162d |
| 110 | Internal Doors, Frames & Hardware – Ground Floor Lobby/Retail |  | 3d | 2027-11-10 | 2027-11-12 | 107, 109 | 226d |
| 113 | Raised Access Flooring – Ground Floor Lobby/Retail |  | 3d | 2027-11-10 | 2027-11-12 | 107, 112 | 230d |
| 116 | Floor Screeds & Substrate Preparation – Ground Floor Lobby/Retail |  | 3d | 2027-11-10 | 2027-11-12 | 107, 115 | 224d |
| 123 | Wall Finishes – Painting, Tiling & Feature Cladding – Ground Floor Lobby/Retail |  | 5d | 2027-11-10 | 2027-11-16 | 107, 122 | 169d |
| 128 | Toilet & Bathroom Fit-Out – Basement Common Areas |  | 3d | 2027-11-11 | 2027-11-15 | 125 | 182d |
| 96 | Curtain Wall & Rain-Screen Cladding Installation — Floor 3 |  | 3d | 2027-11-11 | 2027-11-15 | 95 SS+2d | 0d |
| 120 | Floor Finishes – Wet Areas, Lobby & Common Areas – Ground Floor Lobby/Retail |  | 3d | 2027-11-15 | 2027-11-17 | 116, 119 | 227d |
| 121 | Floor Finishes – Wet Areas, Lobby & Common Areas – Typical Floors (12 floors) |  | 4d | 2027-11-15 | 2027-11-18 | 110 | 226d |
| 97 | Curtain Wall & Rain-Screen Cladding Installation — Floor 4 |  | 3d | 2027-11-15 | 2027-11-17 | 96 SS+2d | 0d |
| 132 | Joinery, Millwork & Built-In Furniture – Basement Common Areas |  | 2d | 2027-11-16 | 2027-11-17 | 128 | 186d |
| 126 | Suspended Ceiling Systems – Ground Floor Lobby/Retail |  | 4d | 2027-11-17 | 2027-11-22 | 123, 125 | 173d |
| 98 | Curtain Wall & Rain-Screen Cladding Installation — Floor 5 |  | 3d | 2027-11-17 | 2027-11-19 | 97 SS+2d | 0d |
| 135 | Wayfinding & Signage Installation – Basement Common Areas |  | 1d | 2027-11-18 | 2027-11-18 | 132 | 192d |
| 99 | Curtain Wall & Rain-Screen Cladding Installation — Floor 6 |  | 3d | 2027-11-19 | 2027-11-23 | 98 SS+2d | 0d |
| 100 | Curtain Wall & Rain-Screen Cladding Installation — Floor 7 |  | 3d | 2027-11-23 | 2027-11-25 | 99 SS+2d | 0d |
| 129 | Toilet & Bathroom Fit-Out – Ground Floor Lobby/Retail |  | 4d | 2027-11-23 | 2027-11-26 | 126, 128 | 177d |
| 131 | Reception, Lobby & Common Area Fit-Out – Ground Floor |  | 10d | 2027-11-23 | 2027-12-06 | 126 | 173d |
| 101 | Curtain Wall & Rain-Screen Cladding Installation — Floor 8 |  | 3d | 2027-11-25 | 2027-11-29 | 100 SS+2d | 0d |
| 117 | Floor Screeds & Substrate Preparation – Typical Floors (12 floors) |  | 6d | 2027-11-26 | 2027-12-03 | 108, 116 | 215d |
| 124 | Wall Finishes – Painting, Tiling & Feature Cladding – Typical Floors (12 floors) |  | 8d | 2027-11-26 | 2027-12-07 | 108, 123 | 162d |

| ID | Activity | Type | Duration | Start | Finish | Predecessors | Total float |
| --- | --- | --- | --- | --- | --- | --- | --- |
| 102 | Curtain Wall & Rain-Screen Cladding Installation — Floor 9 |  | 3d | 2027-11-29 | 2027-12-01 | 101 SS+2d | 0d |
| 103 | Curtain Wall & Rain-Screen Cladding Installation — Floor 10 |  | 3d | 2027-12-01 | 2027-12-03 | 102 SS+2d | 0d |
| 104 | Curtain Wall & Rain-Screen Cladding Installation — Floor 11 |  | 3d | 2027-12-03 | 2027-12-07 | 103 SS+2d | 0d |
| 105 | Curtain Wall & Rain-Screen Cladding Installation — Floor 12 |  | 3d | 2027-12-07 | 2027-12-09 | 104 SS+2d | 0d |
| 133 | Joinery, Millwork & Built-In Furniture – Ground Floor Lobby/Retail |  | 4d | 2027-12-07 | 2027-12-10 | 131, 132 | 173d |
| 127 | Suspended Ceiling Systems – Typical Floors (12 floors) |  | 8d | 2027-12-08 | 2027-12-17 | 124, 126 | 162d |
| 138 | Elevator Pit & Shaft Final Preparation |  | 3d | 2027-12-10 | 2027-12-14 | 308 | 34d |
| 145 | Fire Alarm Installation - Basement |  | 20d | 2027-12-10 | 2028-01-06 | 105 | 146d |
| 149 | Sprinkler Installation - Basement |  | 20d | 2027-12-10 | 2028-01-06 | 105 | 146d |
| 153 | Emergency Lighting Installation - Basement |  | 15d | 2027-12-10 | 2027-12-30 | 105 | 158d |
| 157 | Smoke Control Ductwork Installation - Basement |  | 20d | 2027-12-10 | 2028-01-06 | 105 | 0d |
| 308 | MILESTONE: Building Weathertight | milestone | 0d | 2027-12-10 | 2027-12-10 | 105 | 34d |
| 136 | Wayfinding & Signage Installation – Ground Floor Lobby/Retail |  | 2d | 2027-12-13 | 2027-12-14 | 133, 135 | 176d |
| 139 | Guide Rail & Counterweight Installation |  | 10d | 2027-12-15 | 2027-12-28 | 138 | 34d |
| 130 | Toilet & Bathroom Fit-Out – Typical Floors (12 floors) |  | 6d | 2027-12-20 | 2027-12-27 | 127, 129 | 162d |
| 134 | Joinery, Millwork & Built-In Furniture – Typical Floors (12 floors) |  | 5d | 2027-12-28 | 2028-01-03 | 130, 133 | 162d |
| 140 | MRL Equipment Installation |  | 5d | 2027-12-29 | 2028-01-04 | 139 | 34d |
| 154 | Emergency Lighting Installation - Ground & Lower Floors (1-6) |  | 15d | 2027-12-31 | 2028-01-20 | 153 | 158d |
| 137 | Wayfinding & Signage Installation – Typical Floors (12 floors) |  | 2d | 2028-01-04 | 2028-01-05 | 134, 136 | 162d |
| 141 | Elevator Car & Door Installation |  | 5d | 2028-01-05 | 2028-01-11 | 140 | 34d |
| 146 | Fire Alarm Installation - Ground & Lower Floors (1-6) |  | 20d | 2028-01-07 | 2028-02-03 | 145 | 146d |
| 150 | Sprinkler Installation - Ground & Lower Floors (1-6) |  | 20d | 2028-01-07 | 2028-02-03 | 149 | 146d |
| 158 | Smoke Control Ductwork Installation - Ground & Lower Floors (1-6) |  | 20d | 2028-01-07 | 2028-02-03 | 157 | 0d |
| 142 | Elevator Wiring & Control Panel |  | 5d | 2028-01-12 | 2028-01-18 | 141 | 34d |
| 311 | MILESTONE: CONTRACTUAL DEADLINE (29 Months - 2027-12-31) | milestone | 0d | 2028-01-12 | 2028-01-12 | 303 FS+638d | 188d |
| 143 | Elevator Testing & Authority Inspection |  | 5d | 2028-01-19 | 2028-01-25 | 142 | 34d |
| 272 | Elevator Final Commissioning & Witness Inspection |  | 3d | 2028-01-19 | 2028-01-21 | 142 | 180d |
| 155 | Emergency Lighting Installation - Upper Floors (7-12) |  | 15d | 2028-01-21 | 2028-02-10 | 154 | 158d |
| 144 | Elevator Final Commissioning & Witness Inspection |  | 3d | 2028-01-26 | 2028-01-28 | 143 | 34d |
| 147 | Fire Alarm Installation - Upper Floors (7-12) |  | 20d | 2028-02-04 | 2028-03-02 | 146 | 146d |
| 151 | Sprinkler Installation - Upper Floors (7-12) |  | 20d | 2028-02-04 | 2028-03-02 | 150 | 146d |
| 159 | Smoke Control Ductwork Installation - Upper Floors (7-12) |  | 20d | 2028-02-04 | 2028-03-02 | 158 | 0d |
| 156 | Emergency Lighting Testing & Functional Check |  | 8d | 2028-02-11 | 2028-02-22 | 155 | 158d |
| 160 | Smoke Control System Testing |  | 10d | 2028-03-03 | 2028-03-16 | 159 | 0d |
| 309 | MILESTONE: Life Safety Systems Complete | milestone | 0d | 2028-03-03 | 2028-03-03 | 159 | 10d |
| 161 | Pre-Commissioning Walkdown - B2 |  | 1d | 2028-03-17 | 2028-03-17 | 144, 160, 309 | 0d |
| 162 | Pre-Commissioning Walkdown - B1 |  | 1d | 2028-03-20 | 2028-03-20 | 161 | 0d |
| 177 | HVAC Commissioning - B2 |  | 1d | 2028-03-20 | 2028-03-20 | 161 | 139d |
| 193 | Electrical Systems Testing - B2 |  | 1d | 2028-03-20 | 2028-03-20 | 161 | 139d |
| 209 | Fire Alarm System Integrated Testing - B2 |  | 1d | 2028-03-20 | 2028-03-20 | 161 | 139d |
| 225 | Sprinkler System Commissioning - B2 |  | 1d | 2028-03-20 | 2028-03-20 | 161 | 139d |
| 273 | Acoustic & Indoor Environment Quality Testing - B2 |  | 1d | 2028-03-20 | 2028-03-20 | 161 | 139d |
| 163 | Pre-Commissioning Walkdown - Ground |  | 1d | 2028-03-21 | 2028-03-21 | 162 | 0d |
| 178 | HVAC Commissioning - B1 |  | 1d | 2028-03-21 | 2028-03-21 | 162 | 138d |
| 194 | Electrical Systems Testing - B1 |  | 1d | 2028-03-21 | 2028-03-21 | 162 | 138d |
| 210 | Fire Alarm System Integrated Testing - B1 |  | 1d | 2028-03-21 | 2028-03-21 | 162 | 138d |
| 226 | Sprinkler System Commissioning - B1 |  | 1d | 2028-03-21 | 2028-03-21 | 162 | 138d |
| 274 | Acoustic & Indoor Environment Quality Testing - B1 |  | 1d | 2028-03-21 | 2028-03-21 | 162 | 138d |
| 164 | Pre-Commissioning Walkdown - Floor 01 |  | 1d | 2028-03-22 | 2028-03-22 | 163 | 0d |
| 179 | HVAC Commissioning - Ground |  | 1d | 2028-03-22 | 2028-03-22 | 163 | 137d |
| 195 | Electrical Systems Testing - Ground |  | 1d | 2028-03-22 | 2028-03-22 | 163 | 137d |
| 211 | Fire Alarm System Integrated Testing - Ground |  | 1d | 2028-03-22 | 2028-03-22 | 163 | 137d |
| 227 | Sprinkler System Commissioning - Ground |  | 1d | 2028-03-22 | 2028-03-22 | 163 | 137d |
| 275 | Acoustic & Indoor Environment Quality Testing - Ground |  | 1d | 2028-03-22 | 2028-03-22 | 163 | 137d |
| 180 | HVAC Commissioning - Floor 01 |  | 1d | 2028-03-23 | 2028-03-23 | 164 | 136d |
| 196 | Electrical Systems Testing - Floor 01 |  | 1d | 2028-03-23 | 2028-03-23 | 164 | 136d |
| 212 | Fire Alarm System Integrated Testing - Floor 01 |  | 1d | 2028-03-23 | 2028-03-23 | 164 | 136d |
| 228 | Sprinkler System Commissioning - Floor 01 |  | 1d | 2028-03-23 | 2028-03-23 | 164 | 136d |
| 165 | Pre-Commissioning Walkdown - Floor 02 |  | 1d | 2028-03-24 | 2028-03-24 | 164 SS+2d | 0d |
| 229 | Sprinkler System Commissioning - Floor 02 |  | 1d | 2028-03-27 | 2028-03-27 | 165 | 134d |
| 166 | Pre-Commissioning Walkdown - Floor 03 |  | 1d | 2028-03-28 | 2028-03-28 | 165 SS+2d | 0d |
| 181 | HVAC Commissioning - Floor 02 |  | 1d | 2028-03-28 | 2028-03-28 | 165 SS+2d | 133d |
| 197 | Electrical Systems Testing - Floor 02 |  | 1d | 2028-03-28 | 2028-03-28 | 165 SS+2d | 133d |
| 213 | Fire Alarm System Integrated Testing - Floor 02 |  | 1d | 2028-03-28 | 2028-03-28 | 165 SS+2d | 133d |
| 230 | Sprinkler System Commissioning - Floor 03 |  | 1d | 2028-03-29 | 2028-03-29 | 166 | 132d |
| 167 | Pre-Commissioning Walkdown - Floor 04 |  | 1d | 2028-03-30 | 2028-03-30 | 166 SS+2d | 0d |
| 182 | HVAC Commissioning - Floor 03 |  | 1d | 2028-03-30 | 2028-03-30 | 166 SS+2d | 131d |
| 198 | Electrical Systems Testing - Floor 03 |  | 1d | 2028-03-30 | 2028-03-30 | 166 SS+2d | 131d |
| 214 | Fire Alarm System Integrated Testing - Floor 03 |  | 1d | 2028-03-30 | 2028-03-30 | 166 SS+2d | 131d |
| 231 | Sprinkler System Commissioning - Floor 04 |  | 1d | 2028-03-31 | 2028-03-31 | 167 | 130d |

| ID | Activity | Duration | Start | Finish | Predecessors | Total float |
| --- | --- | --- | --- | --- | --- | --- |
| 168 | Pre-Commissioning Walkdown - Floor 05 | 1d | 2028-04-03 | 2028-04-03 | 167 SS+2d | 0d |
| 183 | HVAC Commissioning - Floor 04 | 1d | 2028-04-03 | 2028-04-03 | 167 SS+2d | 129d |
| 199 | Electrical Systems Testing - Floor 04 | 1d | 2028-04-03 | 2028-04-03 | 167 SS+2d | 129d |
| 215 | Fire Alarm System Integrated Testing - Floor 04 | 1d | 2028-04-03 | 2028-04-03 | 167 SS+2d | 129d |
| 232 | Sprinkler System Commissioning - Floor 05 | 1d | 2028-04-04 | 2028-04-04 | 168 | 128d |
| 169 | Pre-Commissioning Walkdown - Floor 06 | 1d | 2028-04-05 | 2028-04-05 | 168 SS+2d | 0d |
| 184 | HVAC Commissioning - Floor 05 | 1d | 2028-04-05 | 2028-04-05 | 168 SS+2d | 127d |
| 200 | Electrical Systems Testing - Floor 05 | 1d | 2028-04-05 | 2028-04-05 | 168 SS+2d | 127d |
| 216 | Fire Alarm System Integrated Testing - Floor 05 | 1d | 2028-04-05 | 2028-04-05 | 168 SS+2d | 127d |
| 233 | Sprinkler System Commissioning - Floor 06 | 1d | 2028-04-06 | 2028-04-06 | 169 | 126d |
| 170 | Pre-Commissioning Walkdown - Floor 07 | 1d | 2028-04-07 | 2028-04-07 | 169 SS+2d | 0d |
| 185 | HVAC Commissioning - Floor 06 | 1d | 2028-04-07 | 2028-04-07 | 169 SS+2d | 125d |
| 201 | Electrical Systems Testing - Floor 06 | 1d | 2028-04-07 | 2028-04-07 | 169 SS+2d | 125d |
| 217 | Fire Alarm System Integrated Testing - Floor 06 | 1d | 2028-04-07 | 2028-04-07 | 169 SS+2d | 125d |
| 234 | Sprinkler System Commissioning - Floor 07 | 1d | 2028-04-10 | 2028-04-10 | 170 | 124d |
| 171 | Pre-Commissioning Walkdown - Floor 08 | 1d | 2028-04-11 | 2028-04-11 | 170 SS+2d | 0d |
| 186 | HVAC Commissioning - Floor 07 | 1d | 2028-04-11 | 2028-04-11 | 170 SS+2d | 123d |
| 202 | Electrical Systems Testing - Floor 07 | 1d | 2028-04-11 | 2028-04-11 | 170 SS+2d | 123d |
| 218 | Fire Alarm System Integrated Testing - Floor 07 | 1d | 2028-04-11 | 2028-04-11 | 170 SS+2d | 123d |
| 235 | Sprinkler System Commissioning - Floor 08 | 1d | 2028-04-12 | 2028-04-12 | 171 | 122d |
| 172 | Pre-Commissioning Walkdown - Floor 09 | 1d | 2028-04-13 | 2028-04-13 | 171 SS+2d | 0d |
| 187 | HVAC Commissioning - Floor 08 | 1d | 2028-04-13 | 2028-04-13 | 171 SS+2d | 121d |
| 203 | Electrical Systems Testing - Floor 08 | 1d | 2028-04-13 | 2028-04-13 | 171 SS+2d | 121d |
| 219 | Fire Alarm System Integrated Testing - Floor 08 | 1d | 2028-04-13 | 2028-04-13 | 171 SS+2d | 121d |
| 236 | Sprinkler System Commissioning - Floor 09 | 1d | 2028-04-14 | 2028-04-14 | 172 | 120d |
| 267 | BMS/BAS Integrated Functional Testing - Floor 09 | 1d | 2028-04-14 | 2028-04-14 | 172 | 41d |
| 173 | Pre-Commissioning Walkdown - Floor 10 | 1d | 2028-04-17 | 2028-04-17 | 172 SS+2d | 0d |
| 188 | HVAC Commissioning - Floor 09 | 1d | 2028-04-17 | 2028-04-17 | 172 SS+2d | 119d |
| 204 | Electrical Systems Testing - Floor 09 | 1d | 2028-04-17 | 2028-04-17 | 172 SS+2d | 119d |
| 220 | Fire Alarm System Integrated Testing - Floor 09 | 1d | 2028-04-17 | 2028-04-17 | 172 SS+2d | 119d |
| 237 | Sprinkler System Commissioning - Floor 10 | 1d | 2028-04-18 | 2028-04-18 | 173 | 0d |
| 252 | Heating System Pressure & Performance Testing - Floor 10 | 1d | 2028-04-18 | 2028-04-18 | 173 | 20d |
| 268 | BMS/BAS Integrated Functional Testing - Floor 10 | 1d | 2028-04-18 | 2028-04-18 | 267 SS+2d | 41d |
| 174 | Pre-Commissioning Walkdown - Floor 11 | 1d | 2028-04-19 | 2028-04-19 | 173 SS+2d | 10d |
| 189 | HVAC Commissioning - Floor 10 | 1d | 2028-04-19 | 2028-04-19 | 173 SS+2d | 117d |
| 205 | Electrical Systems Testing - Floor 10 | 1d | 2028-04-19 | 2028-04-19 | 173 SS+2d | 117d |
| 221 | Fire Alarm System Integrated Testing - Floor 10 | 1d | 2028-04-19 | 2028-04-19 | 173 SS+2d | 117d |
| 302 | Sprinkler System Commissioning - Floor 11 | 1d | 2028-04-19 | 2028-04-19 | 237 | 0d |
| 238 | Sprinkler System Commissioning - Floor 12 | 1d | 2028-04-20 | 2028-04-20 | 302 | 0d |
| 253 | Heating System Pressure & Performance Testing - Floor 11 | 1d | 2028-04-20 | 2028-04-20 | 252 SS+2d | 20d |
| 269 | BMS/BAS Integrated Functional Testing - Floor 11 | 1d | 2028-04-20 | 2028-04-20 | 268 SS+2d | 41d |
| 175 | Pre-Commissioning Walkdown - Floor 12 | 1d | 2028-04-21 | 2028-04-21 | 174 SS+2d | 10d |
| 190 | HVAC Commissioning - Floor 11 | 1d | 2028-04-21 | 2028-04-21 | 174 SS+2d | 115d |
| 206 | Electrical Systems Testing - Floor 11 | 1d | 2028-04-21 | 2028-04-21 | 174 SS+2d | 115d |
| 222 | Fire Alarm System Integrated Testing - Floor 11 | 1d | 2028-04-21 | 2028-04-21 | 174 SS+2d | 115d |
| 239 | Sprinkler System Commissioning - Roof | 1d | 2028-04-21 | 2028-04-21 | 238 | 0d |
| 240 | Heating System Pressure & Performance Testing - B2 | 1d | 2028-04-24 | 2028-04-24 | 239 | 0d |
| 254 | Heating System Pressure & Performance Testing - Floor 12 | 1d | 2028-04-24 | 2028-04-24 | 253 SS+2d | 20d |
| 270 | BMS/BAS Integrated Functional Testing - Floor 12 | 1d | 2028-04-24 | 2028-04-24 | 269 SS+2d | 41d |
| 176 | Pre-Commissioning Walkdown - Roof | 1d | 2028-04-25 | 2028-04-25 | 175 SS+2d | 10d |
| 191 | HVAC Commissioning - Floor 12 | 1d | 2028-04-25 | 2028-04-25 | 175 SS+2d | 113d |
| 207 | Electrical Systems Testing - Floor 12 | 1d | 2028-04-25 | 2028-04-25 | 175 SS+2d | 113d |
| 223 | Fire Alarm System Integrated Testing - Floor 12 | 1d | 2028-04-25 | 2028-04-25 | 175 SS+2d | 113d |
| 241 | Heating System Pressure & Performance Testing - B1 | 1d | 2028-04-25 | 2028-04-25 | 240 | 0d |
| 242 | Heating System Pressure & Performance Testing - Ground | 1d | 2028-04-26 | 2028-04-26 | 241 | 0d |
| 192 | HVAC Commissioning - Roof | 1d | 2028-04-27 | 2028-04-27 | 176 SS+2d | 10d |
| 208 | Electrical Systems Testing - Roof | 1d | 2028-04-28 | 2028-04-28 | 176 SS+2d, 192 | 10d |
| 243 | Heating System Pressure & Performance Testing - Floor 01 | 1d | 2028-04-28 | 2028-04-28 | 242 SS+2d | 0d |
| 148 | Fire Alarm System Integrated Testing | 5d | 2028-05-01 | 2028-05-05 | 147, 208 | 105d |
| 224 | Fire Alarm System Integrated Testing - Roof | 1d | 2028-05-01 | 2028-05-01 | 176 SS+2d, 208 | 10d |
| 152 | Sprinkler System Commissioning & Hydraulic Testing | 5d | 2028-05-02 | 2028-05-08 | 151, 224 | 104d |
| 244 | Heating System Pressure & Performance Testing - Floor 02 | 1d | 2028-05-02 | 2028-05-02 | 243 SS+2d | 0d |
| 245 | Heating System Pressure & Performance Testing - Floor 03 | 1d | 2028-05-04 | 2028-05-04 | 244 SS+2d | 0d |
| 246 | Heating System Pressure & Performance Testing - Floor 04 | 1d | 2028-05-08 | 2028-05-08 | 245 SS+2d | 0d |
| 247 | Heating System Pressure & Performance Testing - Floor 05 | 1d | 2028-05-10 | 2028-05-10 | 246 SS+2d | 0d |
| 248 | Heating System Pressure & Performance Testing - Floor 06 | 1d | 2028-05-12 | 2028-05-12 | 247 SS+2d | 0d |
| 249 | Heating System Pressure & Performance Testing - Floor 07 | 1d | 2028-05-16 | 2028-05-16 | 248 SS+2d | 0d |
| 250 | Heating System Pressure & Performance Testing - Floor 08 | 1d | 2028-05-18 | 2028-05-18 | 249 SS+2d | 0d |
| 251 | Heating System Pressure & Performance Testing - Floor 09 | 1d | 2028-05-22 | 2028-05-22 | 250 SS+2d, 224 SS+5d | 0d |
| 255 | Heating System Pressure & Performance Testing - Roof | 1d | 2028-05-23 | 2028-05-23 | 254, 251 | 0d |

| ID | Activity | Type | Duration | Start | Finish | Predecessors | Total float |
| --- | --- | --- | --- | --- | --- | --- | --- |
| 256 | BMS/BAS Integrated Functional Testing - B2 |  | 1d | 2028-05-24 | 2028-05-24 | 255 | 0d |
| 257 | BMS/BAS Integrated Functional Testing - B1 |  | 1d | 2028-05-25 | 2028-05-25 | 256 | 0d |
| 258 | BMS/BAS Integrated Functional Testing - Ground |  | 1d | 2028-05-26 | 2028-05-26 | 257 | 0d |
| 259 | BMS/BAS Integrated Functional Testing - Floor 01 |  | 1d | 2028-05-30 | 2028-05-30 | 258 SS+2d | 0d |
| 260 | BMS/BAS Integrated Functional Testing - Floor 02 |  | 1d | 2028-06-01 | 2028-06-01 | 259 SS+2d | 0d |
| 261 | BMS/BAS Integrated Functional Testing - Floor 03 |  | 1d | 2028-06-05 | 2028-06-05 | 260 SS+2d | 0d |
| 262 | BMS/BAS Integrated Functional Testing - Floor 04 |  | 1d | 2028-06-07 | 2028-06-07 | 261 SS+2d | 0d |
| 263 | BMS/BAS Integrated Functional Testing - Floor 05 |  | 1d | 2028-06-09 | 2028-06-09 | 262 SS+2d | 0d |
| 264 | BMS/BAS Integrated Functional Testing - Floor 06 |  | 1d | 2028-06-13 | 2028-06-13 | 263 SS+2d | 0d |
| 265 | BMS/BAS Integrated Functional Testing - Floor 07 |  | 1d | 2028-06-15 | 2028-06-15 | 264 SS+2d | 0d |
| 266 | BMS/BAS Integrated Functional Testing - Floor 08 |  | 1d | 2028-06-19 | 2028-06-19 | 265 SS+2d, 255 SS+5d | 0d |
| 271 | BMS/BAS Integrated Functional Testing - Roof |  | 1d | 2028-06-21 | 2028-06-21 | 270, 266 SS+2d | 0d |
| 276 | Acoustic & Indoor Environment Quality Testing - Floor 01 |  | 1d | 2028-06-22 | 2028-06-22 | 271 | 0d |
| 310 | MILESTONE: All Commissioning Complete | milestone | 0d | 2028-06-22 | 2028-06-22 | 271 | 42d |
| 277 | Underground Service Trenches |  | 10d | 2028-06-23 | 2028-07-06 | 92, 276 | 0d |
| 278 | District Heating Connection to Building |  | 5d | 2028-07-07 | 2028-07-13 | 277 | 0d |
| 279 | Water & Sewer Connection to City Network |  | 5d | 2028-07-07 | 2028-07-13 | 277 | 0d |
| 280 | Stormwater Management System Installation |  | 5d | 2028-07-07 | 2028-07-13 | 277 | 0d |
| 281 | Parking Area Base Course, Paving & Markings |  | 10d | 2028-07-14 | 2028-07-27 | 278, 279, 280 | 0d |
| 282 | Access Roads & Pedestrian Paths |  | 8d | 2028-07-14 | 2028-07-25 | 278, 279, 280 | 2d |
| 283 | External Lighting Installation |  | 5d | 2028-07-28 | 2028-08-03 | 281, 282 | 0d |
| 284 | Landscaping & Soft Landscaping |  | 8d | 2028-08-04 | 2028-08-15 | 283 | 0d |
| 285 | Wayfinding & Signage Installation |  | 3d | 2028-08-16 | 2028-08-18 | 284 | 0d |
| 286 | Final Punch List Rectification Works |  | 10d | 2028-08-21 | 2028-09-01 | 137, 144, 160, 285, 310 | 0d |
| 287 | As-Built Drawings & BIM Model Finalization |  | 10d | 2028-09-04 | 2028-09-15 | 286 | 0d |
| 288 | O&M Manuals Compilation |  | 8d | 2028-09-04 | 2028-09-13 | 286 | 2d |
| 289 | Spare Parts Delivery & Inventory |  | 3d | 2028-09-14 | 2028-09-18 | 288 | 4d |
| 291 | Authority Final Inspection |  | 3d | 2028-09-18 | 2028-09-20 | 287, 288 | 0d |
| 290 | Client & FM Team Training |  | 5d | 2028-09-19 | 2028-09-25 | 289 | 4d |
| 292 | Occupancy Permit Receipt |  | 5d | 2028-09-21 | 2028-09-27 | 291 | 0d |
| 293 | Client Handover, Keys & Documentation Transfer |  | 2d | 2028-09-28 | 2028-09-29 | 292 | 0d |
| 312 | MILESTONE: PROJECT COMPLETE | milestone | 0d | 2028-10-02 | 2028-10-02 | 292, 293, 304, 305, 306, 307, 308, 309, 310, 161, 177, 178, 179, 180, 181, 182, 183, 184, 185, 186, 187, 188, 189, 190, 191, 192, 193, 194, 195, 196, 197, 198, 199, 200, 201, 202, 203, 204, 205, 206, 207, 208, 209, 210, 211, 212, 213, 214, 215, 216, 217, 218, 219, 220, 221, 222, 223, 224, 225, 226, 227, 228, 229, 230, 231, 232, 233, 234, 235, 236, 237, 238, 302, 239, 240, 241, 242, 243, 244, 245, 246, 247, 248, 249, 250, 251, 252, 253, 254, 255, 256, 257, 258, 259, 260, 261, 262, 263, 264, 265, 266, 267, 268, 269, 270, 271, 272, 273, 274, 275, 276, 277, 278, 279, 280, 281, 282, 283, 284, 285, 286, 287, 288, 289, 290, 291, 303, 13, 14, 10, 11, 60, 111, 113, 114, 117, 118, 120, 121, 148, 152, 156 | 0d |
