# "FORUM EL DJAZAIR" - Zone 2 - OFFICE BUILDINGS

Schedule from Primavera P6, 2014-02-01 to 2016-03-31, data date 2014-02-01, costs in USD.
Must finish by 2016-04-01

## Calendars

- PHASE 2: Mon-Sun 08:00-16:00. Exceptions (off unless hours are given): 2014-02-07, 2014-02-14, 2014-02-21, 2014-02-28, 2014-03-07, 2014-03-14, 2014-03-21, 2014-03-28, 2014-04-04, 2014-04-11, 2014-04-18, 2014-04-25, 2014-05-01 to 2014-05-02, 2014-05-09, 2014-05-16, 2014-05-23, 2014-05-30, 2014-06-06, 2014-06-13, 2014-06-19 to 2014-06-20, 2014-06-27, 2014-07-29 to 2014-07-30, 2014-08-01, 2014-08-05 to 2014-08-06, 2014-08-08, 2014-08-15, 2014-08-22, 2014-08-25, 2014-08-29, 2014-09-05, 2014-09-12, 2014-09-19, 2014-09-26, 2014-10-03, 2014-10-10, 2014-10-17, 2014-10-24, 2014-10-31 to 2014-11-01, 2014-11-03, 2014-11-07, 2014-11-14, 2014-11-21, 2014-11-28, 2014-12-05, 2014-12-12, 2014-12-19, 2014-12-26, 2015-01-01 to 2015-01-03, 2015-01-09, 2015-01-16, 2015-01-23, 2015-01-30, 2015-02-06, 2015-02-13, 2015-02-20, 2015-02-27, 2015-03-06, 2015-03-13, 2015-03-20, 2015-03-27, 2015-04-03, 2015-04-10, 2015-04-17, 2015-04-24, 2015-05-01, 2015-05-08, 2015-05-15, 2015-05-22, 2015-05-29, 2015-06-05, 2015-06-12, 2015-06-19, 2015-06-26, 2015-07-03, 2015-07-05, 2015-07-10, 2015-07-17 to 2015-07-19, 2015-07-24, 2015-07-31, 2015-08-07, 2015-08-14, 2015-08-21, 2015-08-28, 2015-09-04, 2015-09-11, 2015-09-18, 2015-09-24 to 2015-09-25, 2015-10-02, 2015-10-09, 2015-10-15 to 2015-10-16, 2015-10-23 to 2015-10-24, 2015-10-30, 2015-11-01, 2015-11-06, 2015-11-13, 2015-11-20, 2015-11-27, 2015-12-04, 2015-12-11, 2015-12-18, 2015-12-24 to 2015-12-25, 2016-01-01, 2016-01-08, 2016-01-15, 2016-01-22, 2016-01-29, 2016-02-05, 2016-02-12, 2016-02-19, 2016-02-26, 2016-03-04, 2016-03-11, 2016-03-18, 2016-03-25.
- - Standard 6 day\8hrs With Holiday.: Mon-Thu 08:00-16:00; Fri off; Sat-Sun 08:00-16:00.
- 3- Glodal 7 day\8 hrs No Hoilday.: Mon-Sun 08:00-16:00.
- EMIRAL ALGERIA: Mon-Thu 08:00-16:00; Fri off; Sat-Sun 08:00-16:00. Exceptions (off unless hours are given): 2014-02-17, 2014-05-01, 2014-06-19, 2014-06-28 to 2014-07-03 10:00-14:00, 2014-07-05, 2014-07-06 to 2014-07-10 10:00-14:00, 2014-07-12 to 2014-07-17 10:00-14:00, 2014-07-19 to 2014-07-24 10:00-14:00, 2014-07-26 to 2014-07-27 10:00-14:00, 2014-07-28 to 2014-07-29, 2014-07-30 to 2014-07-31 10:00-14:00, 2014-10-04 to 2014-10-05, 2014-10-25, 2014-11-01, 2014-11-03, 2014-12-15, 2014-12-22, 2015-01-01, 2015-01-03, 2015-05-02.

## Resources

| Resource | Group | Rate |
| --- | --- | --- |
| Cash Flow | equipment | 1 |
| Electrician | labor |  |
| Excavation | material |  |
| Ductman | labor |  |
| Pipe Fitter - CHW | labor |  |
| Plumber | labor |  |
| Electrician | labor |  |
| Pipe Fitter - FF | labor |  |
| Stone CLadding | material |  |
| MNHRS | labor |  |
| Aluminum Cladding | material |  |
| FW | material |  |
| Waterproofing | material |  |
| Reinforcement | material |  |
| Concrete | material |  |
| BW | material |  |
| Plaster | material |  |
| Painting | material |  |
| Tiling | material |  |
| False Ceiling | material |  |
| Metal Works & Handrail | material |  |
| Cost | equipment |  |

## Schedule

| ID | WBS | Activity | Type | Duration | Start | Finish | Predecessors | Total float | Free float | Calendar | Resources | Cost | Engineering |
| --- | --- | --- | --- | --- | --- | --- | --- | --- | --- | --- | --- | --- | --- |
|  | 1 | **General Requirement & Milestones** |  |  | 2014-02-01 | 2016-03-31 |  |  |  |  |  |  |  |
| GEN1000 |  | Commencement Date | milestone | 0d | 2014-02-01 | 2014-02-01 |  | 0d |  |  |  |  |  |
| GEN1010 |  | Preliminaries |  | 790d | 2014-02-01 | 2016-03-31 | GEN1000 | 0d |  | 3- Glodal 7 day\8 hrs No Hoilday. | Cash Flow [8582181 h]; Excavation [790] | 8,582,181 |  |
| GEN1020 |  | SONELGAS NOC | milestone | 0d | 2014-02-01 | 2014-02-01 | GEN1000 | 123.25d | 0d |  |  |  |  |
| GEN1030 |  | CIVIL PROTECTION NOC | milestone | 0d | 2014-02-01 | 2014-02-01 | GEN1000 | 150d | 0d |  |  |  |  |
| GEN1040 |  | SEIAL NOC | milestone | 0d | 2014-02-01 | 2014-02-01 | GEN1000 | 625d | 569d |  |  |  |  |
| GEN1050 |  | ALGER TELECOM NOC | milestone | 0d | 2014-02-01 | 2014-02-01 | GEN1000 | 223d | 0d |  |  |  |  |
| GEN1100 |  | Finish Date | milestone | 0d | 2016-03-31 | 2016-03-31 | BL1-LFT-10, BL2-LFT-10, BL3-LFT-10, GEN1010, SNAG100, DWG100, T&C-BL3-140, T&C-BL3-130, BL3-XE-EAST-10, BL3-XE-EAST-20, BL2-XE-EAST-10, BL2-XE-EAST-20, BL1-XE-EAST-20, BL1-XE-EAST-10, BL1-FN-7F-1100, BL2-FN-9F-1100, AUTH-DR-130, AUTH-FF-110, T&C-BL1-130, T&C-BL1-140, T&C-BL2-130, T&C-BL2-140 | 0d |  |  |  |  |  |
|  | 2 | **Engineering** |  |  | 2014-02-01 | 2015-02-15 |  |  |  |  |  |  |  |
|  | 1 | **Structural** |  |  | 2014-02-01 | 2014-09-24 |  |  |  |  |  |  |  |
|  | 1 | **Basements** |  |  | 2014-02-01 | 2014-03-11 |  |  |  |  |  |  |  |
|  | 1 | **Submital** |  |  | 2014-02-01 | 2014-02-23 |  |  |  |  |  |  |  |
| ENG-STR-SUB1000 |  | SS2 Pile Cap |  | 5d | 2014-02-01 | 2014-02-05 | GEN1000 | 10d | 0d |  | Excavation [5] |  | Str |
| ENG-STR-SUB1010 |  | SS2 Raft |  | 5d | 2014-02-01 | 2014-02-05 | ENG-STR-SUB1000 SS | 10d | 0d |  | Excavation [5] |  | Str |
| ENG-STR-SUB1020 |  | SS2 Sump Pit |  | 5d | 2014-02-06 | 2014-02-11 | ENG-STR-SUB1000 | 171d | 0d |  | Excavation [5] |  | Str |
| ENG-STR-SUB1030 |  | SS2 to GF Walls |  | 5d | 2014-02-06 | 2014-02-11 | ENG-STR-SUB1010 | 61d | 0d |  | Excavation [5] |  | Str |
| ENG-STR-SUB1040 |  | SS2 to GF Columns |  | 5d | 2014-02-06 | 2014-02-11 | ENG-STR-SUB1030 SS | 91.5d | 0d |  | Excavation [5] |  | Str |
| ENG-STR-SUB1050 |  | SS2 to GF Stairs |  | 5d | 2014-02-06 | 2014-02-11 | ENG-STR-SUB1030 SS | 91.5d | 0d |  | Excavation [5] |  | Str |
| ENG-STR-SUB1060 |  | SS2 to GF Ramp |  | 5d | 2014-02-06 | 2014-02-11 | ENG-STR-SUB1030 SS | 61d | 0d |  | Excavation [5] |  | Str |
| ENG-STR-SUB1070 |  | SS1 Slab |  | 5d | 2014-02-12 | 2014-02-17 | ENG-STR-SUB1060 | 122.5d | 0d |  | Excavation [5] |  | Str |
| ENG-STR-SUB1080 |  | SS1 Beams |  | 5d | 2014-02-12 | 2014-02-17 | ENG-STR-SUB1070 SS | 122.5d | 0d |  | Excavation [5] |  | Str |
| ENG-STR-SUB1130 |  | GF Slab |  | 5d | 2014-02-18 | 2014-02-23 | ENG-STR-SUB1080 | 159.5d | 0d |  | Excavation [5] |  | Str |
| ENG-STR-SUB1140 |  | GF Beams |  | 5d | 2014-02-18 | 2014-02-23 | ENG-STR-SUB1130 SS | 159.5d | 0d |  | Excavation [5] |  | Str |
|  | 2 | **Approval** |  |  | 2014-02-06 | 2014-03-11 |  |  |  |  |  |  |  |
| ENG-STR-APP100 |  | SS2 Pile Cap |  | 14d | 2014-02-06 | 2014-02-22 | ENG-STR-SUB1000 | 10d |  |  | Excavation [14] |  | Str |
| ENG-STR-APP110 |  | SS2 Raft |  | 14d | 2014-02-06 | 2014-02-22 | ENG-STR-SUB1010 | 10d | 0d |  | Excavation [14] |  | Str |
| ENG-STR-APP120 |  | SS2 Sump Pit |  | 14d | 2014-02-12 | 2014-02-27 | ENG-STR-SUB1020 | 171d | 59d |  | Excavation [14] |  | Str |
| ENG-STR-APP130 |  | SS2 to GF Walls |  | 14d | 2014-02-12 | 2014-02-27 | ENG-STR-SUB1030 | 91.5d | 31d |  | Excavation [14] |  | Str |
| ENG-STR-APP140 |  | SS2 to GF Columns |  | 14d | 2014-02-12 | 2014-02-27 | ENG-STR-SUB1040 | 91.5d | 31d |  | Excavation [14] |  | Str |
| ENG-STR-APP150 |  | SS2 to GF Stairs |  | 14d | 2014-02-12 | 2014-02-27 | ENG-STR-SUB1050 | 91.5d | 31d |  | Excavation [14] |  | Str |
| ENG-STR-APP160 |  | SS2 to GF Ramp |  | 14d | 2014-02-12 | 2014-02-27 | ENG-STR-SUB1060 | 91.5d | 31d |  | Excavation [14] |  | Str |
| ENG-STR-APP170 |  | SS1 Slab |  | 14d | 2014-02-18 | 2014-03-05 | ENG-STR-SUB1070 | 122.5d | 35d |  | Excavation [14] |  | Str |
| ENG-STR-APP180 |  | SS1 Beams |  | 14d | 2014-02-18 | 2014-03-05 | ENG-STR-SUB1080 | 122.5d | 65d |  | Excavation [14] |  | Str |
| ENG-STR-APP230 |  | GF Slab |  | 14d | 2014-02-24 | 2014-03-11 | ENG-STR-SUB1130 | 159.5d | 102d |  | Excavation [14] |  | Str |
| ENG-STR-APP240 |  | GF Beams |  | 14d | 2014-02-24 | 2014-03-11 | ENG-STR-SUB1140 | 159.5d | 102d |  | Excavation [14] |  | Str |

| ID | WBS | Activity | Duration | Start | Finish | Predecessors | Total float | Free float | Resources | Engineering |
| --- | --- | --- | --- | --- | --- | --- | --- | --- | --- | --- |
|  | 2 | **Block 1** |  | 2014-02-12 | 2014-05-04 |  |  |  |  |  |
|  | 1 | **Submital** |  | 2014-02-12 | 2014-04-16 |  |  |  |  |  |
| ENG-STR-BL1-SUB100 |  | SS2 to 1st Walls | 5d | 2014-02-12 | 2014-02-17 | ENG-STR-SUB1060 | 61d | 0d | Excavation [5] | Str |
| ENG-STR-BL1-SUB110 |  | SS2 to 1st Columns | 5d | 2014-02-18 | 2014-02-23 | ENG-STR-BL1-SUB100 | 61d | 0d | Excavation [5] | Str |
| ENG-STR-BL1-SUB120 |  | SS2 to 1st Stairs | 5d | 2014-02-24 | 2014-03-01 | ENG-STR-BL1-SUB100, ENG-STR-BL1-SUB110 | 61d | 0d | Excavation [5] | Str |
| ENG-STR-BL1-SUB130 |  | 1st Floor Slab | 5d | 2014-03-02 | 2014-03-06 | ENG-STR-BL1-SUB120 | 61d | 0d | Excavation [5] | Str |
| ENG-STR-BL1-SUB140 |  | 1st Beams | 5d | 2014-03-02 | 2014-03-06 | ENG-STR-BL1-SUB130 SS | 61d | 0d | Excavation [5] | Str |
| ENG-STR-BL1-SUB150 |  | 1st to 4th Walls | 5d | 2014-03-08 | 2014-03-12 | ENG-STR-BL1-SUB130 | 165.5d | 0d | Excavation [5] | Str |
| ENG-STR-BL1-SUB160 |  | 1st to 4th Columns | 5d | 2014-03-08 | 2014-03-12 | ENG-STR-BL1-SUB150 SS | 165.5d | 0d | Excavation [5] | Str |
| ENG-STR-BL1-SUB170 |  | 1st to 4th Stairs | 5d | 2014-03-08 | 2014-03-12 | ENG-STR-BL1-SUB160 SS | 165.5d | 0d | Excavation [5] | Str |
| ENG-STR-BL1-SUB180 |  | 2nd Floor Slab | 5d | 2014-03-08 | 2014-03-12 | ENG-STR-BL1-SUB140 | 199.5d | 0d | Excavation [5] | Str |
| ENG-STR-BL1-SUB190 |  | 2nd Floor Beams | 5d | 2014-03-08 | 2014-03-12 | ENG-STR-BL1-SUB180 SS | 199.5d | 0d | Excavation [5] | Str |
| ENG-STR-BL1-SUB200 |  | 3rd Floor Slab | 5d | 2014-03-13 | 2014-03-18 | ENG-STR-BL1-SUB190 | 228.5d | 0d | Excavation [5] | Str |
| ENG-STR-BL1-SUB210 |  | 3rd Floor Beams | 5d | 2014-03-13 | 2014-03-18 | ENG-STR-BL1-SUB200 SS | 228.5d | 0d | Excavation [5] | Str |
| ENG-STR-BL1-SUB220 |  | 4th Floor Slab | 5d | 2014-03-19 | 2014-03-24 | ENG-STR-BL1-SUB210 | 242.5d | 0d | Excavation [5] | Str |
| ENG-STR-BL1-SUB230 |  | 4th Floor Beams | 5d | 2014-03-19 | 2014-03-24 | ENG-STR-BL1-SUB220 SS | 242.5d | 0d | Excavation [5] | Str |
| ENG-STR-BL1-SUB240 |  | 4th to Roof Walls | 5d | 2014-03-25 | 2014-03-30 | ENG-STR-BL1-SUB230 | 242.5d | 0d | Excavation [5] | Str |
| ENG-STR-BL1-SUB250 |  | 4th to Roof Columns | 5d | 2014-03-25 | 2014-03-30 | ENG-STR-BL1-SUB240 SS | 242.5d | 0d | Excavation [5] | Str |
| ENG-STR-BL1-SUB260 |  | 4th to Roof Stairs | 5d | 2014-03-25 | 2014-03-30 | ENG-STR-BL1-SUB250 SS | 242.5d | 0d | Excavation [5] | Str |
| ENG-STR-BL1-SUB270 |  | 5th Floor Slab | 5d | 2014-03-25 | 2014-03-30 | ENG-STR-BL1-SUB230 | 266.5d | 0d | Excavation [5] | Str |
| ENG-STR-BL1-SUB280 |  | 5th Floor Beams | 5d | 2014-03-25 | 2014-03-30 | ENG-STR-BL1-SUB270 SS | 266.5d | 0d | Excavation [5] | Str |
| ENG-STR-BL1-SUB290 |  | 6th Floor Slab | 5d | 2014-03-31 | 2014-04-05 | ENG-STR-BL1-SUB280 | 285.5d | 0d | Excavation [5] | Str |
| ENG-STR-BL1-SUB300 |  | 6th Floor Beams | 5d | 2014-03-31 | 2014-04-05 | ENG-STR-BL1-SUB290 SS | 285.5d | 0d | Excavation [5] | Str |
| ENG-STR-BL1-SUB310 |  | 7th Floor Slab | 5d | 2014-04-06 | 2014-04-10 | ENG-STR-BL1-SUB300 | 298.5d | 0d | Excavation [5] | Str |
| ENG-STR-BL1-SUB320 |  | 7th Floor Beams | 5d | 2014-04-06 | 2014-04-10 | ENG-STR-BL1-SUB310 SS | 298.5d | 0d | Excavation [5] | Str |
| ENG-STR-BL1-SUB330 |  | Roof Floor Slab | 5d | 2014-04-12 | 2014-04-16 | ENG-STR-BL1-SUB320 | 298.5d | 0d | Excavation [5] | Str |
| ENG-STR-BL1-SUB340 |  | Roof Floor Beams | 5d | 2014-04-12 | 2014-04-16 | ENG-STR-BL1-SUB330 SS | 298.5d | 0d | Excavation [5] | Str |

| ID | WBS | Activity | Duration | Start | Finish | Predecessors | Total float | Free float | Resources | Engineering |
| --- | --- | --- | --- | --- | --- | --- | --- | --- | --- | --- |
|  | 2 | **Approval** |  | 2014-02-18 | 2014-05-04 |  |  |  |  |  |
| ENG-STR-BL1-APP100 |  | SS2 to 1st Walls | 14d | 2014-02-18 | 2014-03-05 | ENG-STR-BL1-SUB100 | 86.5d | 19d | Excavation [14] | Str |
| ENG-STR-BL1-APP110 |  | SS2 to 1st Columns | 14d | 2014-02-24 | 2014-03-11 | ENG-STR-BL1-SUB110 | 81.5d | 0d | Excavation [14] | Str |
| ENG-STR-BL1-APP120 |  | SS2 to 1st Stairs | 14d | 2014-03-02 | 2014-03-17 | ENG-STR-BL1-SUB120 | 76.5d | 16d | Excavation [14] | Str |
| ENG-STR-BL1-APP130 |  | 1st Floor Slab | 14d | 2014-03-08 | 2014-03-23 | ENG-STR-BL1-SUB130 | 170.5d | 113d | Excavation [14] | Str |
| ENG-STR-BL1-APP140 |  | 1st Beams | 14d | 2014-03-08 | 2014-03-23 | ENG-STR-BL1-SUB140 | 170.5d | 113d | Excavation [14] | Str |
| ENG-STR-BL1-APP150 |  | 1st to 4th Walls | 14d | 2014-03-13 | 2014-03-29 | ENG-STR-BL1-SUB150 | 165.5d | 108d | Excavation [14] | Str |
| ENG-STR-BL1-APP160 |  | 1st to 4th Columns | 14d | 2014-03-13 | 2014-03-29 | ENG-STR-BL1-SUB160 | 165.5d | 108d | Excavation [14] | Str |
| ENG-STR-BL1-APP170 |  | 1st to 4th Stairs | 14d | 2014-03-13 | 2014-03-29 | ENG-STR-BL1-SUB170 | 165.5d | 108d | Excavation [14] | Str |
| ENG-STR-BL1-APP180 |  | 2nd Floor Slab | 14d | 2014-03-13 | 2014-03-29 | ENG-STR-BL1-SUB180 | 199.5d | 142d | Excavation [14] | Str |
| ENG-STR-BL1-APP190 |  | 2nd Floor Beams | 14d | 2014-03-13 | 2014-03-29 | ENG-STR-BL1-SUB190 | 199.5d | 142d | Excavation [14] | Str |
| ENG-STR-BL1-APP200 |  | 3rd Floor Slab | 14d | 2014-03-19 | 2014-04-03 | ENG-STR-BL1-SUB200 | 228.5d | 171d | Excavation [14] | Str |
| ENG-STR-BL1-APP210 |  | 3rd Floor Beams | 14d | 2014-03-19 | 2014-04-03 | ENG-STR-BL1-SUB210 | 228.5d | 171d | Excavation [14] | Str |
| ENG-STR-BL1-APP220 |  | 4th Floor Slab | 14d | 2014-03-25 | 2014-04-09 | ENG-STR-BL1-SUB220 | 247.5d | 190d | Excavation [14] | Str |
| ENG-STR-BL1-APP230 |  | 4th Floor Beams | 14d | 2014-03-25 | 2014-04-09 | ENG-STR-BL1-SUB230 | 247.5d | 190d | Excavation [14] | Str |
| ENG-STR-BL1-APP240 |  | 4th to Roof Walls | 14d | 2014-03-31 | 2014-04-15 | ENG-STR-BL1-SUB240 | 242.5d | 185d | Excavation [14] | Str |
| ENG-STR-BL1-APP250 |  | 4th to Roof Columns | 14d | 2014-03-31 | 2014-04-15 | ENG-STR-BL1-SUB250 | 242.5d | 185d | Excavation [14] | Str |
| ENG-STR-BL1-APP260 |  | 4th to Roof Stairs | 14d | 2014-03-31 | 2014-04-15 | ENG-STR-BL1-SUB260 | 242.5d | 185d | Excavation [14] | Str |
| ENG-STR-BL1-APP270 |  | 5th Floor Slab | 14d | 2014-03-31 | 2014-04-15 | ENG-STR-BL1-SUB270 | 266.5d | 209d | Excavation [14] | Str |
| ENG-STR-BL1-APP280 |  | 5th Floor Beams | 14d | 2014-03-31 | 2014-04-15 | ENG-STR-BL1-SUB280 | 266.5d | 209d | Excavation [14] | Str |
| ENG-STR-BL1-APP290 |  | 6th Floor Slab | 14d | 2014-04-06 | 2014-04-21 | ENG-STR-BL1-SUB290 | 285.5d | 228d | Excavation [14] | Str |
| ENG-STR-BL1-APP300 |  | 6th Floor Beams | 14d | 2014-04-06 | 2014-04-21 | ENG-STR-BL1-SUB300 | 285.5d | 228d | Excavation [14] | Str |
| ENG-STR-BL1-APP310 |  | 7th Floor Slab | 14d | 2014-04-12 | 2014-04-27 | ENG-STR-BL1-SUB310 | 303.5d | 246d | Excavation [14] | Str |
| ENG-STR-BL1-APP320 |  | 7th Floor Beams | 14d | 2014-04-12 | 2014-04-27 | ENG-STR-BL1-SUB320 | 303.5d | 246d | Excavation [14] | Str |
| ENG-STR-BL1-APP330 |  | Roof Floor Slab | 14d | 2014-04-17 | 2014-05-04 | ENG-STR-BL1-SUB330 | 298.5d | 241d | Excavation [14] | Str |
| ENG-STR-BL1-APP340 |  | Roof Floor Beams | 14d | 2014-04-17 | 2014-05-04 | ENG-STR-BL1-SUB340 | 298.5d | 241d | Excavation [14] | Str |

| ID | WBS | Activity | Duration | Start | Finish | Predecessors | Total float | Free float | Resources | Engineering |
| --- | --- | --- | --- | --- | --- | --- | --- | --- | --- | --- |
|  | 3 | **Block 2** |  | 2014-03-08 | 2014-06-08 |  |  |  |  |  |
|  | 1 | **Submital** |  | 2014-03-08 | 2014-05-22 |  |  |  |  |  |
| ENG-STR-BL2-SUB100 |  | SS2 to 1st Walls | 5d | 2014-03-08 | 2014-03-12 | ENG-STR-BL1-SUB140 | 61d | 0d | Excavation [5] | Str |
| ENG-STR-BL2-SUB110 |  | SS2 to 1st Columns | 5d | 2014-03-13 | 2014-03-18 | ENG-STR-BL2-SUB100 | 61d | 0d | Excavation [5] | Str |
| ENG-STR-BL2-SUB120 |  | SS2 to 1st Stairs | 5d | 2014-03-19 | 2014-03-24 | ENG-STR-BL2-SUB110 | 61d | 0d | Excavation [5] | Str |
| ENG-STR-BL2-SUB130 |  | 1st Floor Slab | 5d | 2014-03-25 | 2014-03-30 | ENG-STR-BL2-SUB120 | 145d | 0d | Excavation [5] | Str |
| ENG-STR-BL2-SUB140 |  | 1st Beams | 5d | 2014-03-25 | 2014-03-30 | ENG-STR-BL2-SUB130 SS | 145d | 0d | Excavation [5] | Str |
| ENG-STR-BL2-SUB150 |  | 1st to 4th Walls | 5d | 2014-03-25 | 2014-03-30 | ENG-STR-BL2-SUB120 | 145d | 0d | Excavation [5] | Str |
| ENG-STR-BL2-SUB160 |  | 1st to 4th Columns | 5d | 2014-03-25 | 2014-03-30 | ENG-STR-BL2-SUB150 SS | 145d | 0d | Excavation [5] | Str |
| ENG-STR-BL2-SUB170 |  | 1st to 4th Stairs | 5d | 2014-03-25 | 2014-03-30 | ENG-STR-BL2-SUB160 SS | 145d | 0d | Excavation [5] | Str |
| ENG-STR-BL2-SUB180 |  | 2nd Floor Slab | 5d | 2014-03-31 | 2014-04-05 | ENG-STR-BL2-SUB140 | 176d | 0d | Excavation [5] | Str |
| ENG-STR-BL2-SUB190 |  | 2nd Floor Beams | 5d | 2014-03-31 | 2014-04-05 | ENG-STR-BL2-SUB180 SS | 176d | 0d | Excavation [5] | Str |
| ENG-STR-BL2-SUB240 |  | 4th to Roof Walls | 5d | 2014-03-31 | 2014-04-05 | ENG-STR-BL2-SUB170 | 235d | 0d | Excavation [5] | Str |
| ENG-STR-BL2-SUB250 |  | 4th to Roof Columns | 5d | 2014-03-31 | 2014-04-05 | ENG-STR-BL2-SUB240 SS | 235d | 0d | Excavation [5] | Str |
| ENG-STR-BL2-SUB260 |  | 4th to Roof Stairs | 5d | 2014-03-31 | 2014-04-05 | ENG-STR-BL2-SUB250 SS | 235d | 0d | Excavation [5] | Str |
| ENG-STR-BL2-SUB200 |  | 3rd Floor Slab | 5d | 2014-04-06 | 2014-04-10 | ENG-STR-BL2-SUB190 | 205d | 0d | Excavation [5] | Str |
| ENG-STR-BL2-SUB210 |  | 3rd Floor Beams | 5d | 2014-04-06 | 2014-04-10 | ENG-STR-BL2-SUB200 SS | 205d | 0d | Excavation [5] | Str |
| ENG-STR-BL2-SUB220 |  | 4th Floor Slab | 5d | 2014-04-12 | 2014-04-16 | ENG-STR-BL2-SUB210 | 225d | 0d | Excavation [5] | Str |
| ENG-STR-BL2-SUB230 |  | 4th Floor Beams | 5d | 2014-04-12 | 2014-04-16 | ENG-STR-BL2-SUB220 SS | 225d | 0d | Excavation [5] | Str |
| ENG-STR-BL2-SUB270 |  | 5th Floor Slab | 5d | 2014-04-17 | 2014-04-22 | ENG-STR-BL2-SUB230 | 242d | 0d | Excavation [5] | Str |
| ENG-STR-BL2-SUB280 |  | 5th Floor Beams | 5d | 2014-04-17 | 2014-04-22 | ENG-STR-BL2-SUB270 SS | 242d | 0d | Excavation [5] | Str |
| ENG-STR-BL2-SUB290 |  | 6th Floor Slab | 5d | 2014-04-23 | 2014-04-28 | ENG-STR-BL2-SUB280 | 259d | 0d | Excavation [5] | Str |
| ENG-STR-BL2-SUB300 |  | 6th Floor Beams | 5d | 2014-04-23 | 2014-04-28 | ENG-STR-BL2-SUB290 SS | 259d | 0d | Excavation [5] | Str |
| ENG-STR-BL2-SUB310 |  | 7th Floor Slab | 5d | 2014-04-29 | 2014-05-05 | ENG-STR-BL2-SUB300 | 276d | 0d | Excavation [5] | Str |
| ENG-STR-BL2-SUB320 |  | 7th Floor Beams | 5d | 2014-04-29 | 2014-05-05 | ENG-STR-BL2-SUB310 SS | 276d | 0d | Excavation [5] | Str |
| ENG-STR-BL2-SUB330 |  | 8th Floor Slab | 5d | 2014-05-06 | 2014-05-11 | ENG-STR-BL2-SUB320 | 293d | 0d | Excavation [5] | Str |
| ENG-STR-BL2-SUB340 |  | 8th Floor Beams | 5d | 2014-05-06 | 2014-05-11 | ENG-STR-BL2-SUB330 SS | 293d | 0d | Excavation [5] | Str |
| ENG-STR-BL2-SUB350 |  | 9th Floor Slab | 5d | 2014-05-12 | 2014-05-17 | ENG-STR-BL2-SUB340 | 305d | 0d | Excavation [5] | Str |
| ENG-STR-BL2-SUB360 |  | 9th Floor Beams | 5d | 2014-05-12 | 2014-05-17 | ENG-STR-BL2-SUB350 SS | 305d | 0d | Excavation [5] | Str |
| ENG-STR-BL2-SUB370 |  | Roof Floor Slab | 5d | 2014-05-18 | 2014-05-22 | ENG-STR-BL2-SUB360 | 305d | 0d | Excavation [5] | Str |
| ENG-STR-BL2-SUB380 |  | Roof Floor Beams | 5d | 2014-05-18 | 2014-05-22 | ENG-STR-BL2-SUB370 SS | 305d | 0d | Excavation [5] | Str |

| ID | WBS | Activity | Duration | Start | Finish | Predecessors | Total float | Free float | Resources | Engineering |
| --- | --- | --- | --- | --- | --- | --- | --- | --- | --- | --- |
|  | 2 | **Approval** |  | 2014-03-13 | 2014-06-08 |  |  |  |  |  |
| ENG-STR-BL2-APP100 |  | SS2 to 1st Walls | 14d | 2014-03-13 | 2014-03-29 | ENG-STR-BL2-SUB100 | 76d | 52d | Excavation [14] | Str |
| ENG-STR-BL2-APP110 |  | SS2 to 1st Columns | 14d | 2014-03-19 | 2014-04-03 | ENG-STR-BL2-SUB110 | 71d | 47d | Excavation [14] | Str |
| ENG-STR-BL2-APP120 |  | SS2 to 1st Stairs | 14d | 2014-03-25 | 2014-04-09 | ENG-STR-BL2-SUB120 | 66d | 42d | Excavation [14] | Str |
| ENG-STR-BL2-APP130 |  | 1st Floor Slab | 14d | 2014-03-31 | 2014-04-15 | ENG-STR-BL2-SUB130 | 145d | 121d | Excavation [14] | Str |
| ENG-STR-BL2-APP140 |  | 1st Beams | 14d | 2014-03-31 | 2014-04-15 | ENG-STR-BL2-SUB140 | 145d | 121d | Excavation [14] | Str |
| ENG-STR-BL2-APP150 |  | 1st to 4th Walls | 14d | 2014-03-31 | 2014-04-15 | ENG-STR-BL2-SUB150 | 145d | 121d | Excavation [14] | Str |
| ENG-STR-BL2-APP160 |  | 1st to 4th Columns | 14d | 2014-03-31 | 2014-04-15 | ENG-STR-BL2-SUB160 | 145d | 121d | Excavation [14] | Str |
| ENG-STR-BL2-APP170 |  | 1st to 4th Stairs | 14d | 2014-03-31 | 2014-04-15 | ENG-STR-BL2-SUB170 | 145d | 121d | Excavation [14] | Str |
| ENG-STR-BL2-APP240 |  | 4th to Roof Walls | 14d | 2014-03-31 | 2014-04-15 | ENG-STR-BL2-SUB240 SS | 240d | 216d | Excavation [14] | Str |
| ENG-STR-BL2-APP180 |  | 2nd Floor Slab | 14d | 2014-04-06 | 2014-04-21 | ENG-STR-BL2-SUB180 | 176d | 152d | Excavation [14] | Str |
| ENG-STR-BL2-APP190 |  | 2nd Floor Beams | 14d | 2014-04-06 | 2014-04-21 | ENG-STR-BL2-SUB190 | 176d | 152d | Excavation [14] | Str |
| ENG-STR-BL2-APP250 |  | 4th to Roof Columns | 14d | 2014-04-06 | 2014-04-21 | ENG-STR-BL2-SUB250 | 235d | 211d | Excavation [14] | Str |
| ENG-STR-BL2-APP260 |  | 4th to Roof Stairs | 14d | 2014-04-06 | 2014-04-21 | ENG-STR-BL2-SUB260 | 235d | 211d | Excavation [14] | Str |
| ENG-STR-BL2-APP200 |  | 3rd Floor Slab | 14d | 2014-04-12 | 2014-04-27 | ENG-STR-BL2-SUB200 | 205d | 181d | Excavation [14] | Str |
| ENG-STR-BL2-APP210 |  | 3rd Floor Beams | 14d | 2014-04-12 | 2014-04-27 | ENG-STR-BL2-SUB210 | 205d | 181d | Excavation [14] | Str |
| ENG-STR-BL2-APP220 |  | 4th Floor Slab | 14d | 2014-04-17 | 2014-05-04 | ENG-STR-BL2-SUB220 | 225d | 201d | Excavation [14] | Str |
| ENG-STR-BL2-APP230 |  | 4th Floor Beams | 14d | 2014-04-17 | 2014-05-04 | ENG-STR-BL2-SUB230 | 225d | 201d | Excavation [14] | Str |
| ENG-STR-BL2-APP270 |  | 5th Floor Slab | 14d | 2014-04-23 | 2014-05-10 | ENG-STR-BL2-SUB270 | 242d | 218d | Excavation [14] | Str |
| ENG-STR-BL2-APP280 |  | 5th Floor Beams | 14d | 2014-04-23 | 2014-05-10 | ENG-STR-BL2-SUB280 | 242d | 218d | Excavation [14] | Str |
| ENG-STR-BL2-APP290 |  | 6th Floor Slab | 14d | 2014-04-29 | 2014-05-15 | ENG-STR-BL2-SUB290 | 259d | 235d | Excavation [14] | Str |
| ENG-STR-BL2-APP300 |  | 6th Floor Beams | 14d | 2014-04-29 | 2014-05-15 | ENG-STR-BL2-SUB300 | 259d | 235d | Excavation [14] | Str |
| ENG-STR-BL2-APP310 |  | 7th Floor Slab | 14d | 2014-05-06 | 2014-05-21 | ENG-STR-BL2-SUB310 | 276d | 252d | Excavation [14] | Str |
| ENG-STR-BL2-APP320 |  | 7th Floor Beams | 14d | 2014-05-06 | 2014-05-21 | ENG-STR-BL2-SUB320 | 276d | 252d | Excavation [14] | Str |
| ENG-STR-BL2-APP330 |  | 8th Floor Slab | 14d | 2014-05-12 | 2014-05-27 | ENG-STR-BL2-SUB330 | 293d | 269d | Excavation [14] | Str |
| ENG-STR-BL2-APP340 |  | 8th Floor Beams | 14d | 2014-05-12 | 2014-05-27 | ENG-STR-BL2-SUB340 | 293d | 269d | Excavation [14] | Str |
| ENG-STR-BL2-APP350 |  | 9th Floor Slab | 14d | 2014-05-18 | 2014-06-02 | ENG-STR-BL2-SUB350 | 310d | 286d | Excavation [14] | Str |
| ENG-STR-BL2-APP360 |  | 9th Floor Beams | 14d | 2014-05-18 | 2014-06-02 | ENG-STR-BL2-SUB360 | 310d | 286d | Excavation [14] | Str |
| ENG-STR-BL2-APP370 |  | Roof Floor Slab | 14d | 2014-05-24 | 2014-06-08 | ENG-STR-BL2-SUB370 | 305d | 281d | Excavation [14] | Str |
| ENG-STR-BL2-APP380 |  | Roof Floor Beams | 14d | 2014-05-24 | 2014-06-08 | ENG-STR-BL2-SUB380 | 305d | 281d | Excavation [14] | Str |

| ID | WBS | Activity | Duration | Start | Finish | Predecessors | Total float | Free float | Resources | Engineering |
| --- | --- | --- | --- | --- | --- | --- | --- | --- | --- | --- |
|  | 4 | **Block 3** |  | 2014-03-25 | 2014-09-24 |  |  |  |  |  |
|  | 1 | **Submital** |  | 2014-03-25 | 2014-09-08 |  |  |  |  |  |
| ENG-STR-BL3-SUB100 |  | SS2 to 1st Walls | 5d | 2014-03-25 | 2014-03-30 | ENG-STR-BL2-SUB120 | 61d | 0d | Excavation [5] | Str |
| ENG-STR-BL3-SUB110 |  | SS2 to 1st Columns | 5d | 2014-03-31 | 2014-04-05 | ENG-STR-BL3-SUB100 | 73d | 0d | Excavation [5] | Str |
| ENG-STR-BL3-SUB120 |  | SS2 to 1st Stairs | 5d | 2014-04-06 | 2014-04-10 | ENG-STR-BL3-SUB110 | 73d | 0d | Excavation [5] | Str |
| ENG-STR-BL3-SUB130 |  | 1st Floor Slab | 5d | 2014-04-12 | 2014-04-16 | ENG-STR-BL3-SUB120 | 137d | 0d | Excavation [5] | Str |
| ENG-STR-BL3-SUB140 |  | 1st Beams | 5d | 2014-04-12 | 2014-04-16 | ENG-STR-BL3-SUB130 SS | 137d | 0d | Excavation [5] | Str |
| ENG-STR-BL3-SUB150 |  | 1st to 4th Walls | 5d | 2014-04-17 | 2014-04-22 | ENG-STR-BL3-SUB140 | 137d | 0d | Excavation [5] | Str |
| ENG-STR-BL3-SUB160 |  | 1st to 4th Columns | 5d | 2014-04-23 | 2014-04-28 | ENG-STR-BL3-SUB150 | 137d | 0d | Excavation [5] | Str |
| ENG-STR-BL3-SUB170 |  | 1st to 4th Stairs | 5d | 2014-04-29 | 2014-05-05 | ENG-STR-BL3-SUB160 | 137d | 0d | Excavation [5] | Str |
| ENG-STR-BL3-SUB180 |  | 2nd Floor Slab | 5d | 2014-05-06 | 2014-05-11 | ENG-STR-BL3-SUB170 | 166d | 0d | Excavation [5] | Str |
| ENG-STR-BL3-SUB190 |  | 2nd Floor Beams | 5d | 2014-05-06 | 2014-05-11 | ENG-STR-BL3-SUB180 SS | 166d | 0d | Excavation [5] | Str |
| ENG-STR-BL3-SUB200 |  | 3rd Floor Slab | 5d | 2014-05-12 | 2014-05-17 | ENG-STR-BL3-SUB190 | 195d | 0d | Excavation [5] | Str |
| ENG-STR-BL3-SUB210 |  | 3rd Floor Beams | 5d | 2014-05-12 | 2014-05-17 | ENG-STR-BL3-SUB200 SS | 195d | 0d | Excavation [5] | Str |
| ENG-STR-BL3-SUB220 |  | 4th Floor Slab | 5d | 2014-05-18 | 2014-05-22 | ENG-STR-BL3-SUB210 | 197d | 0d | Excavation [5] | Str |
| ENG-STR-BL3-SUB230 |  | 4th Floor Beams | 5d | 2014-05-18 | 2014-05-22 | ENG-STR-BL3-SUB220 SS | 197d | 0d | Excavation [5] | Str |
| ENG-STR-BL3-SUB240 |  | 4th to 7th Walls | 5d | 2014-05-24 | 2014-05-28 | ENG-STR-BL3-SUB230 | 197d | 0d | Excavation [5] | Str |
| ENG-STR-BL3-SUB250 |  | 4th to 7th Columns | 5d | 2014-05-29 | 2014-06-03 | ENG-STR-BL3-SUB240 | 197d | 0d | Excavation [5] | Str |
| ENG-STR-BL3-SUB260 |  | 4th to 7th Stairs | 5d | 2014-06-04 | 2014-06-09 | ENG-STR-BL3-SUB250 | 197d | 0d | Excavation [5] | Str |
| ENG-STR-BL3-SUB270 |  | 5th Floor Slab | 5d | 2014-06-10 | 2014-06-15 | ENG-STR-BL3-SUB260 | 214d | 0d | Excavation [5] | Str |
| ENG-STR-BL3-SUB280 |  | 5th Floor Beams | 5d | 2014-06-10 | 2014-06-15 | ENG-STR-BL3-SUB270 SS | 214d | 0d | Excavation [5] | Str |
| ENG-STR-BL3-SUB290 |  | 6th Floor Slab | 5d | 2014-06-16 | 2014-06-22 | ENG-STR-BL3-SUB280 | 231d | 0d | Excavation [5] | Str |
| ENG-STR-BL3-SUB300 |  | 6th Floor Beams | 5d | 2014-06-16 | 2014-06-22 | ENG-STR-BL3-SUB290 SS | 231d | 0d | Excavation [5] | Str |
| ENG-STR-BL3-SUB310 |  | 7th Floor Slab | 5d | 2014-06-23 | 2014-06-28 | ENG-STR-BL3-SUB300 | 233d | 0d | Excavation [5] | Str |
| ENG-STR-BL3-SUB320 |  | 7th Floor Beams | 5d | 2014-06-23 | 2014-06-28 | ENG-STR-BL3-SUB310 SS | 233d | 0d | Excavation [5] | Str |
| ENG-STR-BL3-SUB340 |  | 7th to 9th Columns | 5d | 2014-06-29 | 2014-07-06 | ENG-STR-BL3-SUB320 | 233d | 0d | Excavation [5] | Str |
| ENG-STR-BL3-SUB350 |  | 7th to 9th Stairs | 5d | 2014-07-07 | 2014-07-16 | ENG-STR-BL3-SUB340 | 233d | 0d | Excavation [5] | Str |
| ENG-STR-BL3-SUB330 |  | 7th to 9th Walls | 5d | 2014-07-17 | 2014-07-26 | ENG-STR-BL3-SUB350 | 233d | 0d | Excavation [5] | Str |
| ENG-STR-BL3-SUB360 |  | 8th Floor Beams | 5d | 2014-07-17 | 2014-07-26 | ENG-STR-BL3-SUB350 | 255d | 0d | Excavation [5] | Str |
| ENG-STR-BL3-SUB370 |  | 8th Floor Slab | 5d | 2014-07-17 | 2014-07-26 | ENG-STR-BL3-SUB360 SS | 255d | 0d | Excavation [5] | Str |
| ENG-STR-BL3-SUB380 |  | 9th Floor Beams | 5d | 2014-07-27 | 2014-08-04 | ENG-STR-BL3-SUB370 | 257d | 0d | Excavation [5] | Str |
| ENG-STR-BL3-SUB390 |  | 9th Floor Slab | 5d | 2014-07-27 | 2014-08-04 | ENG-STR-BL3-SUB380 SS | 257d | 0d | Excavation [5] | Str |
| ENG-STR-BL3-SUB400 |  | 9th to Roof Walls | 5d | 2014-08-05 | 2014-08-10 | ENG-STR-BL3-SUB390 | 257d | 0d | Excavation [5] | Str |
| ENG-STR-BL3-SUB410 |  | 9th to Roof Columns | 5d | 2014-08-11 | 2014-08-16 | ENG-STR-BL3-SUB400 | 257d | 0d | Excavation [5] | Str |
| ENG-STR-BL3-SUB420 |  | 9th to Roof Stairs | 5d | 2014-08-17 | 2014-08-21 | ENG-STR-BL3-SUB410 | 257d | 0d | Excavation [5] | Str |
| ENG-STR-BL3-SUB430 |  | 10th Floor Beams | 5d | 2014-08-23 | 2014-08-27 | ENG-STR-BL3-SUB420 | 274d | 0d | Excavation [5] | Str |
| ENG-STR-BL3-SUB440 |  | 10th Floor Slab | 5d | 2014-08-23 | 2014-08-27 | ENG-STR-BL3-SUB430 SS | 274d | 0d | Excavation [5] | Str |
| ENG-STR-BL3-SUB450 |  | 11th Floor Beams | 5d | 2014-08-28 | 2014-09-02 | ENG-STR-BL3-SUB440 | 286d | 0d | Excavation [5] | Str |
| ENG-STR-BL3-SUB460 |  | 11th Floor Slab | 5d | 2014-08-28 | 2014-09-02 | ENG-STR-BL3-SUB450 SS | 286d | 0d | Excavation [5] | Str |
| ENG-STR-BL3-SUB470 |  | Roof Floor Beams | 5d | 2014-09-03 | 2014-09-08 | ENG-STR-BL3-SUB460 | 286d | 0d | Excavation [5] | Str |
| ENG-STR-BL3-SUB480 |  | Roof Floor Slab | 5d | 2014-09-03 | 2014-09-08 | ENG-STR-BL3-SUB470 SS | 286d | 0d | Excavation [5] | Str |

| ID | WBS | Activity | Duration | Start | Finish | Predecessors | Total float | Free float | Resources | Engineering |
| --- | --- | --- | --- | --- | --- | --- | --- | --- | --- | --- |
|  | 2 | **Approval** |  | 2014-03-31 | 2014-09-24 |  |  |  |  |  |
| ENG-STR-BL3-APP100 |  | SS2 to 1st Walls | 14d | 2014-03-31 | 2014-04-15 | ENG-STR-BL3-SUB100 | 61d | 37d | Excavation [14] | Str |
| ENG-STR-BL3-APP110 |  | SS2 to 1st Columns | 14d | 2014-04-06 | 2014-04-21 | ENG-STR-BL3-SUB110 | 78d |  | Excavation [14] | Str |
| ENG-STR-BL3-APP120 |  | SS2 to 1st Stairs | 14d | 2014-04-12 | 2014-04-27 | ENG-STR-BL3-SUB120 | 73d |  | Excavation [14] | Str |
| ENG-STR-BL3-APP130 |  | 1st Floor Slab | 14d | 2014-04-17 | 2014-05-04 | ENG-STR-BL3-SUB130 | 152d |  | Excavation [14] | Str |
| ENG-STR-BL3-APP140 |  | 1st Beams | 14d | 2014-04-17 | 2014-05-04 | ENG-STR-BL3-SUB140 | 152d |  | Excavation [14] | Str |
| ENG-STR-BL3-APP150 |  | 1st to 4th Walls | 14d | 2014-04-23 | 2014-05-10 | ENG-STR-BL3-SUB150 | 147d |  | Excavation [14] | Str |
| ENG-STR-BL3-APP160 |  | 1st to 4th Columns | 14d | 2014-04-29 | 2014-05-15 | ENG-STR-BL3-SUB160 | 142d |  | Excavation [14] | Str |
| ENG-STR-BL3-APP170 |  | 1st to 4th Stairs | 14d | 2014-05-06 | 2014-05-21 | ENG-STR-BL3-SUB170 | 137d |  | Excavation [14] | Str |
| ENG-STR-BL3-APP180 |  | 2nd Floor Slab | 14d | 2014-05-12 | 2014-05-27 | ENG-STR-BL3-SUB180 | 166d |  | Excavation [14] | Str |
| ENG-STR-BL3-APP190 |  | 2nd Floor Beams | 14d | 2014-05-12 | 2014-05-27 | ENG-STR-BL3-SUB190 | 166d |  | Excavation [14] | Str |
| ENG-STR-BL3-APP200 |  | 3rd Floor Slab | 14d | 2014-05-18 | 2014-06-02 | ENG-STR-BL3-SUB200 | 195d |  | Excavation [14] | Str |
| ENG-STR-BL3-APP210 |  | 3rd Floor Beams | 14d | 2014-05-18 | 2014-06-02 | ENG-STR-BL3-SUB210 | 195d |  | Excavation [14] | Str |
| ENG-STR-BL3-APP220 |  | 4th Floor Slab | 14d | 2014-05-24 | 2014-06-08 | ENG-STR-BL3-SUB220 | 212d |  | Excavation [14] | Str |
| ENG-STR-BL3-APP230 |  | 4th Floor Beams | 14d | 2014-05-24 | 2014-06-08 | ENG-STR-BL3-SUB230 | 212d |  | Excavation [14] | Str |
| ENG-STR-BL3-APP240 |  | 4th to 7th Walls | 14d | 2014-05-29 | 2014-06-14 | ENG-STR-BL3-SUB240 | 207d |  | Excavation [14] | Str |
| ENG-STR-BL3-APP250 |  | 4th to 7th Columns | 14d | 2014-06-04 | 2014-06-21 | ENG-STR-BL3-SUB250 | 202d |  | Excavation [14] | Str |
| ENG-STR-BL3-APP260 |  | 4th to 7th Stairs | 14d | 2014-06-10 | 2014-06-26 | ENG-STR-BL3-SUB260 | 197d |  | Excavation [14] | Str |
| ENG-STR-BL3-APP270 |  | 5th Floor Slab | 14d | 2014-06-16 | 2014-07-04 | ENG-STR-BL3-SUB270 | 214d |  | Excavation [14] | Str |
| ENG-STR-BL3-APP280 |  | 5th Floor Beams | 14d | 2014-06-16 | 2014-07-04 | ENG-STR-BL3-SUB280 | 214d |  | Excavation [14] | Str |
| ENG-STR-BL3-APP290 |  | 6th Floor Slab | 14d | 2014-06-23 | 2014-07-14 | ENG-STR-BL3-SUB290 | 231d |  | Excavation [14] | Str |
| ENG-STR-BL3-APP300 |  | 6th Floor Beams | 14d | 2014-06-23 | 2014-07-14 | ENG-STR-BL3-SUB300 | 231d |  | Excavation [14] | Str |
| ENG-STR-BL3-APP310 |  | 7th Floor Slab | 14d | 2014-06-29 | 2014-07-24 | ENG-STR-BL3-SUB310 | 248d |  | Excavation [14] | Str |
| ENG-STR-BL3-APP320 |  | 7th Floor Beams | 14d | 2014-06-29 | 2014-07-24 | ENG-STR-BL3-SUB320 | 248d |  | Excavation [14] | Str |
| ENG-STR-BL3-APP340 |  | 7th to 9th Columns | 14d | 2014-07-07 | 2014-08-03 | ENG-STR-BL3-SUB340 | 243d |  | Excavation [14] | Str |
| ENG-STR-BL3-APP350 |  | 7th to 9th Stairs | 14d | 2014-07-17 | 2014-08-09 | ENG-STR-BL3-SUB350 | 238d |  | Excavation [14] | Str |
| ENG-STR-BL3-APP330 |  | 7th to 9th Walls | 14d | 2014-07-27 | 2014-08-14 | ENG-STR-BL3-SUB330 | 233d |  | Excavation [14] | Str |
| ENG-STR-BL3-APP360 |  | 8th Floor Beams | 14d | 2014-07-27 | 2014-08-14 | ENG-STR-BL3-SUB360 | 255d |  | Excavation [14] | Str |
| ENG-STR-BL3-APP370 |  | 8th Floor Slab | 14d | 2014-07-27 | 2014-08-14 | ENG-STR-BL3-SUB370 | 255d |  | Excavation [14] | Str |
| ENG-STR-BL3-APP380 |  | 9th Floor Beams | 14d | 2014-08-05 | 2014-08-20 | ENG-STR-BL3-SUB380 | 272d |  | Excavation [14] | Str |
| ENG-STR-BL3-APP390 |  | 9th Floor Slab | 14d | 2014-08-05 | 2014-08-20 | ENG-STR-BL3-SUB390 | 272d |  | Excavation [14] | Str |
| ENG-STR-BL3-APP400 |  | 9th to Roof Walls | 14d | 2014-08-11 | 2014-08-26 | ENG-STR-BL3-SUB400 | 267d |  | Excavation [14] | Str |
| ENG-STR-BL3-APP410 |  | 9th to Roof Columns | 14d | 2014-08-17 | 2014-09-01 | ENG-STR-BL3-SUB410 | 262d |  | Excavation [14] | Str |
| ENG-STR-BL3-APP420 |  | 9th to Roof Stairs | 14d | 2014-08-23 | 2014-09-07 | ENG-STR-BL3-SUB420 | 257d |  | Excavation [14] | Str |
| ENG-STR-BL3-APP430 |  | 10th Floor Beams | 14d | 2014-08-28 | 2014-09-13 | ENG-STR-BL3-SUB430 | 274d |  | Excavation [14] | Str |
| ENG-STR-BL3-APP440 |  | 10th Floor Slab | 14d | 2014-08-28 | 2014-09-13 | ENG-STR-BL3-SUB440 | 274d |  | Excavation [14] | Str |
| ENG-STR-BL3-APP450 |  | 11th Floor Beams | 14d | 2014-09-03 | 2014-09-18 | ENG-STR-BL3-SUB450 | 291d |  | Excavation [14] | Str |
| ENG-STR-BL3-APP460 |  | 11th Floor Slab | 14d | 2014-09-03 | 2014-09-18 | ENG-STR-BL3-SUB460 | 291d |  | Excavation [14] | Str |
| ENG-STR-BL3-APP470 |  | Roof Floor Beams | 14d | 2014-09-09 | 2014-09-24 | ENG-STR-BL3-SUB470 | 286d |  | Excavation [14] | Str |
| ENG-STR-BL3-APP480 |  | Roof Floor Slab | 14d | 2014-09-09 | 2014-09-24 | ENG-STR-BL3-SUB480 | 286d |  | Excavation [14] | Str |

| ID | WBS | Activity | Duration | Start | Finish | Predecessors | Total float | Free float | Resources | Engineering |
| --- | --- | --- | --- | --- | --- | --- | --- | --- | --- | --- |
|  | 2 | **Architectural** |  | 2014-03-08 | 2014-11-05 |  |  |  |  |  |
|  | 1 | **All Buildings** |  | 2014-03-08 | 2014-11-05 |  |  |  |  |  |
|  | 9 | **Metal Work** |  | 2014-06-28 | 2014-08-19 |  |  |  |  |  |
|  | 1 | **Submission** |  | 2014-06-28 | 2014-08-03 |  |  |  |  |  |
| ENG-MW-SUB1000 |  | Metal Handrails | 20d | 2014-06-28 | 2014-08-03 | A1370 | 253.5d | 0d | Excavation [20] | Arch |
| ENG-MW-SUB1010 |  | Metal Roof Access | 20d | 2014-06-28 | 2014-08-03 | A1370 | 253.5d | 0d | Excavation [20] | Arch |
|  | 2 | **Approval** |  | 2014-08-04 | 2014-08-19 |  |  |  |  |  |
| ENG-MW-APP1000 |  | Metal handrails | 14d | 2014-08-04 | 2014-08-19 | ENG-MW-SUB1000 | 253.5d | 127d | Excavation [14] | Arch |
| ENG-MW-APP1010 |  | Metal Roof Access | 14d | 2014-08-04 | 2014-08-19 | ENG-MW-SUB1010 | 253.5d | 127d | Excavation [14] | Arch |
|  | 1 | **Blockwork & Plaster Typical Detail** |  | 2014-03-08 | 2014-04-03 |  |  |  |  |  |
|  | 1 | **Submission** |  | 2014-03-08 | 2014-03-18 |  |  |  |  |  |
| ENG-TYP-SUB1000 |  | Typical Detail | 10d | 2014-03-08 | 2014-03-18 | GEN1000 FS+30d | 196d | 0d | Excavation [10] | Arch |
|  | 2 | **Approval** |  | 2014-03-19 | 2014-04-03 |  |  |  |  |  |
| ENG-TYP-APP1000 |  | Typical Detail | 14d | 2014-03-19 | 2014-04-03 | ENG-TYP-SUB1000 | 231.5d | 103d | Excavation [14] | Arch |
|  | 10 | **Aluminum** |  | 2014-09-08 | 2014-11-05 |  |  |  |  |  |
|  | 1 | **Submission** |  | 2014-09-08 | 2014-10-16 |  |  |  |  |  |
| ENG-AL-SUB1000 |  | Aluminum Cladding | 30d | 2014-09-08 | 2014-10-16 | A1320 | 360d | 0d | Excavation [30] | Arch |
|  | 2 | **Approval** |  | 2014-10-18 | 2014-11-05 |  |  |  |  |  |
| ENG-AL-APP1000 |  | Aluminum Cladding | 14d | 2014-10-18 | 2014-11-05 | ENG-AL-SUB1000 | 360d | 125d | Excavation [14] | Arch |
|  | 2 | **Waterproofing** |  | 2014-04-05 | 2014-05-03 |  |  |  |  |  |
|  | 1 | **Submission** |  | 2014-04-05 | 2014-04-15 |  |  |  |  |  |
| ENG-WP-SUB1000 |  | Water Proofing Details | 10d | 2014-04-05 | 2014-04-15 | A1270 | 290.5d | 0d | Excavation [10] | Arch |
|  | 2 | **Approval** |  | 2014-04-16 | 2014-05-03 |  |  |  |  |  |
| ENG-WP-APP1000 |  | Water Proofing Details | 14d | 2014-04-16 | 2014-05-03 | ENG-WP-SUB1000 | 290.5d | 159d | Excavation [14] | Arch |

| ID | WBS | Activity | Duration | Start | Finish | Predecessors | Total float | Free float | Resources | Engineering |
| --- | --- | --- | --- | --- | --- | --- | --- | --- | --- | --- |
|  | Sundry Items | **Sundry Items** |  | 2014-06-09 | 2014-08-13 |  |  |  |  |  |
|  | 1 | **Submission** |  | 2014-06-09 | 2014-07-24 |  |  |  |  |  |
| ENG-SI-SUB1000 |  | Kitchen Units & Vanities Counter | 30d | 2014-06-09 | 2014-07-24 | A1420 | 273.5d | 0d | Excavation [30] | Arch |
|  | 2 | **Approval** |  | 2014-07-25 | 2014-08-13 |  |  |  |  |  |
| ENG-SI-APP1000 |  | Kitchen Units & Vanities Counter | 14d | 2014-07-25 | 2014-08-13 | ENG-SI-SUB1000 | 273.5d | 147d | Excavation [14] | Arch |
|  | 5 | **Finish Schedule** |  | 2014-07-27 | 2014-08-26 |  |  |  |  |  |
|  | 1 | **Submission** |  | 2014-07-27 | 2014-08-10 |  |  |  |  |  |
| ENG-FS-SUB-BL11000 |  | Finish Schedule | 10d | 2014-07-27 | 2014-08-10 | ENG-FC-SUB-BL11030 | 184.5d | 0d | Excavation [10] | Arch |
|  | 2 | **Approval** |  | 2014-08-11 | 2014-08-26 |  |  |  |  |  |
| ENG-FS-APP-BL11000 |  | Finish Schedule | 14d | 2014-08-11 | 2014-08-26 | ENG-FS-SUB-BL11000 | 184.5d | 53d | Excavation [14] | Arch |
|  | 2 | **Podium** |  | 2014-03-08 | 2014-09-17 |  |  |  |  |  |
|  | 1 | **Blockwork** |  | 2014-03-08 | 2014-04-15 |  |  |  |  |  |
|  | 1 | **Submission** |  | 2014-03-08 | 2014-03-30 |  |  |  |  |  |
| ENG-BW-SUB-POD1000 |  | Basement 2 BW | 10d | 2014-03-08 | 2014-03-18 | GEN1000 FS+30d | 163d | 0d | Excavation [10] | Arch |
| ENG-BW-SUB-POD1010 |  | Basement 1 BW | 10d | 2014-03-19 | 2014-03-30 | ENG-BW-SUB-POD1000 | 201.5d | 0d | Excavation [10] | Arch |
|  | 2 | **Approval** |  | 2014-03-19 | 2014-04-15 |  |  |  |  |  |
| ENG-BW-APP-POD1000 |  | Basement 2 BW | 14d | 2014-03-19 | 2014-04-03 | ENG-BW-SUB-POD1000 | 163d | 0d | Excavation [14] | Arch |
| ENG-BW-APP-POD1010 |  | Basement 1 BW | 14d | 2014-03-31 | 2014-04-15 | ENG-BW-SUB-POD1010 | 221.5d | 93d | Excavation [14] | Arch |
|  | 2 | **Wet Areas** |  | 2014-03-31 | 2014-05-10 |  |  |  |  |  |
|  | 1 | **Submission** |  | 2014-03-31 | 2014-04-22 |  |  |  |  |  |
| ENG-WA-SUB-POD1000 |  | Basement 2 Wet Areas | 10d | 2014-03-31 | 2014-04-10 | ENG-BW-SUB-POD1010 | 201.5d | 0d | Excavation [10] | Arch |
| ENG-WA-SUB-POD1010 |  | Basement 1 Wet Areas | 10d | 2014-04-12 | 2014-04-22 | ENG-WA-SUB-POD1000 | 201.5d | 0d | Excavation [10] | Arch |
|  | 2 | **Approval** |  | 2014-04-12 | 2014-05-10 |  |  |  |  |  |
| ENG-WA-APP-POD1000 |  | Basement 2 Wet Areas | 14d | 2014-04-12 | 2014-04-27 | ENG-WA-SUB-POD1000 | 211.5d | 83d | Excavation [14] | Arch |
| ENG-WA-APP-POD1010 |  | Basement 1 Wet Areas | 14d | 2014-04-23 | 2014-05-10 | ENG-WA-SUB-POD1010 | 201.5d | 73d | Excavation [14] | Arch |

| ID | WBS | Activity | Duration | Start | Finish | Predecessors | Total float | Free float | Resources | Engineering |
| --- | --- | --- | --- | --- | --- | --- | --- | --- | --- | --- |
|  | 3 | **Doors Schedule** |  | 2014-08-10 | 2014-09-17 |  |  |  |  |  |
|  | 1 | **Submission** |  | 2014-08-10 | 2014-09-01 |  |  |  |  |  |
| ENG-DS-SUB-POD1000 |  | Basement 2 Doors Schedule | 10d | 2014-08-10 | 2014-08-20 | ENG-DS-SUB-BL11030 | 243.5d | 0d | Excavation [10] | Arch |
| ENG-DS-SUB-POD1010 |  | Basement 1 Doors Schedule | 10d | 2014-08-21 | 2014-09-01 | ENG-DS-SUB-POD1000 | 243.5d | 0d | Excavation [10] | Arch |
|  | 2 | **Approval** |  | 2014-08-21 | 2014-09-17 |  |  |  |  |  |
| ENG-DS-APP-POD1000 |  | Basement 2 Doors Schedule | 14d | 2014-08-21 | 2014-09-06 | ENG-DS-SUB-POD1000 | 253.5d | 127d | Excavation [14] | Arch |
| ENG-DS-APP-POD1010 |  | Basement 1 Doors Schedule | 14d | 2014-09-02 | 2014-09-17 | ENG-DS-SUB-POD1010 | 243.5d | 117d | Excavation [14] | Arch |
|  | Stair Case | **Stair Case** |  | 2014-04-23 | 2014-05-21 |  |  |  |  |  |
|  | 1 | **Submission** |  | 2014-04-23 | 2014-05-05 |  |  |  |  |  |
| ENG-SC-SUB-POD1000 |  | Basement 2 Stair Case | 5d | 2014-04-23 | 2014-04-28 | ENG-SC-SUB-BL11000 | 317.5d | 0d | Excavation [5] | Arch |
| ENG-SC-SUB-POD1010 |  | Basement 1 Stair Case | 5d | 2014-04-29 | 2014-05-05 | ENG-SC-SUB-POD1000 | 317.5d | 0d | Excavation [5] | Arch |
|  | 2 | **Approval** |  | 2014-04-29 | 2014-05-21 |  |  |  |  |  |
| ENG-SC-APP-POD1000 |  | Basement 2 Stair Case | 14d | 2014-04-29 | 2014-05-15 | ENG-SC-SUB-POD1000 | 322.5d | 196d | Excavation [14] | Arch |
| ENG-SC-APP-POD1010 |  | Basement 1 Stair Case | 14d | 2014-05-06 | 2014-05-21 | ENG-SC-SUB-POD1010 | 317.5d | 191d | Excavation [14] | Arch |
|  | 11 | **Block 1** |  | 2014-03-19 | 2014-08-25 |  |  |  |  |  |
|  | 1 | **Blockwork** |  | 2014-03-19 | 2014-04-27 |  |  |  |  |  |
|  | 1 | **Submission** |  | 2014-03-19 | 2014-04-10 |  |  |  |  |  |
| ENG-BW-SUB-BL11000 |  | Ground Floor | 5d | 2014-03-19 | 2014-03-24 | ENG-TYP-SUB1000 | 196d | 0d | Excavation [5] | Arch |
| ENG-BW-SUB-BL11010 |  | First Floor | 5d | 2014-03-25 | 2014-03-30 | ENG-BW-SUB-BL11000 | 208d | 0d | Excavation [5] | Arch |
| ENG-BW-SUB-BL11020 |  | 2nd to 6th Floor | 5d | 2014-03-31 | 2014-04-05 | ENG-BW-SUB-BL11010 | 208d | 0d | Excavation [5] | Arch |
| ENG-BW-SUB-BL11030 |  | Roof | 5d | 2014-04-06 | 2014-04-10 | ENG-BW-SUB-BL11020 | 241d | 0d | Excavation [5] | Arch |
|  | 2 | **Approval** |  | 2014-03-25 | 2014-04-27 |  |  |  |  |  |
| ENG-BW-APP-BL11000 |  | Ground Floor | 14d | 2014-03-25 | 2014-04-09 | ENG-BW-SUB-BL11000 | 206d | 32d | Excavation [14] | Arch |
| ENG-BW-APP-BL11010 |  | First Floor | 14d | 2014-03-31 | 2014-04-15 | ENG-BW-SUB-BL11010 | 213d | 41d | Excavation [14] | Arch |
| ENG-BW-APP-BL11020 |  | 2nd to 6th Floor | 14d | 2014-04-06 | 2014-04-21 | ENG-BW-SUB-BL11020 | 208d | 36d | Excavation [14] | Arch |
| ENG-BW-APP-BL11030 |  | Roof | 14d | 2014-04-12 | 2014-04-27 | ENG-BW-SUB-BL11030 | 252.5d | 64d | Excavation [14] | Arch |

| ID | WBS | Activity | Duration | Start | Finish | Predecessors | Total float | Free float | Resources | Engineering |
| --- | --- | --- | --- | --- | --- | --- | --- | --- | --- | --- |
|  | 3 | **False Ceiling** |  | 2014-05-29 | 2014-08-14 |  |  |  |  |  |
|  | 1 | **Submission** |  | 2014-05-29 | 2014-07-26 |  |  |  |  |  |
| ENG-FC-SUB-BL11000 |  | Ground Floor | 10d | 2014-05-29 | 2014-06-09 | A1520 | 111d | 0d | Excavation [10] | Arch |
| ENG-FC-SUB-BL11010 |  | First Floor | 10d | 2014-06-10 | 2014-06-22 | A1520, ENG-FC-SUB-BL11000 | 123d | 0d | Excavation [10] | Arch |
| ENG-FC-SUB-BL11020 |  | 2nd to 6th Floor | 10d | 2014-06-23 | 2014-07-06 | A1520, ENG-FC-SUB-BL11010 | 123d | 0d | Excavation [10] | Arch |
| ENG-FC-SUB-BL11030 |  | Roof Floor | 10d | 2014-07-07 | 2014-07-26 | A1520, ENG-FC-SUB-BL11020 | 127d | 0d | Excavation [10] | Arch |
|  | 2 | **Approval** |  | 2014-06-10 | 2014-08-14 |  |  |  |  |  |
| ENG-FC-APP-BL11000 |  | Ground Floor | 14d | 2014-06-10 | 2014-06-26 | ENG-FC-SUB-BL11000 | 131d | 20d | Excavation [14] | Arch |
| ENG-FC-APP-BL11010 |  | First Floor | 14d | 2014-06-23 | 2014-07-14 | ENG-FC-SUB-BL11010 | 133d | 24d | Excavation [14] | Arch |
| ENG-FC-APP-BL11020 |  | 2nd to 6th Floor | 14d | 2014-07-07 | 2014-08-03 | ENG-FC-SUB-BL11020 | 123d | 14d | Excavation [14] | Arch |
| ENG-FC-APP-BL11030 |  | Roof Floor | 14d | 2014-07-27 | 2014-08-14 | ENG-FC-SUB-BL11030 | 127d | 18d | Excavation [14] | Arch |
|  | 4 | **Wet Areas** |  | 2014-06-10 | 2014-08-03 |  |  |  |  |  |
|  | 1 | **Submission** |  | 2014-06-10 | 2014-07-06 |  |  |  |  |  |
| ENG-WA-SUB-BL11000 |  | Ground Floor | 5d | 2014-06-10 | 2014-06-15 | ENG-FC-SUB-BL11000 | 142d | 0d | Excavation [5] | Arch |
| ENG-WA-SUB-BL11010 |  | First Floor | 5d | 2014-06-16 | 2014-06-22 | ENG-WA-SUB-BL11000 | 142d | 0d | Excavation [5] | Arch |
| ENG-WA-SUB-BL11020 |  | 2nd to 6th Floor | 5d | 2014-06-23 | 2014-06-28 | ENG-WA-SUB-BL11010 | 171d | 0d | Excavation [5] | Arch |
| ENG-WA-SUB-BL11030 |  | Roof Floor | 5d | 2014-06-29 | 2014-07-06 | ENG-WA-SUB-BL11020 | 171d | 0d | Excavation [5] | Arch |
|  | 2 | **Approval** |  | 2014-06-16 | 2014-08-03 |  |  |  |  |  |
| ENG-WA-APP-BL11000 |  | Ground Floor | 14d | 2014-06-16 | 2014-07-04 | ENG-WA-SUB-BL11000 | 197.5d | 96d | Excavation [14] | Arch |
| ENG-WA-APP-BL11010 |  | First Floor | 14d | 2014-06-23 | 2014-07-14 | ENG-WA-SUB-BL11010 | 192.5d | 91d | Excavation [14] | Arch |
| ENG-WA-APP-BL11020 |  | 2nd to 6th Floor | 14d | 2014-06-29 | 2014-07-24 | ENG-WA-SUB-BL11020 | 187.5d | 86d | Excavation [14] | Arch |
| ENG-WA-APP-BL11030 |  | Roof Floor | 14d | 2014-07-07 | 2014-08-03 | ENG-WA-SUB-BL11030 | 182.5d | 81d | Excavation [14] | Arch |
|  | 6 | **Door Schedule** |  | 2014-06-09 | 2014-08-25 |  |  |  |  |  |
|  | 1 | **Submission** |  | 2014-06-09 | 2014-08-09 |  |  |  |  |  |
| ENG-DS-SUB-BL11000 |  | Ground Floor | 10d | 2014-06-09 | 2014-06-21 | A1420 | 243.5d | 0d | Excavation [10] | Arch |
| ENG-DS-SUB-BL11010 |  | First Floor | 10d | 2014-06-22 | 2014-07-04 | ENG-DS-SUB-BL11000 | 243.5d | 0d | Excavation [10] | Arch |
| ENG-DS-SUB-BL11020 |  | 2nd to 6th Floor | 10d | 2014-07-05 | 2014-07-24 | ENG-DS-SUB-BL11010 | 243.5d | 0d | Excavation [10] | Arch |
| ENG-DS-SUB-BL11030 |  | Roof Floor | 10d | 2014-07-25 | 2014-08-09 | ENG-DS-SUB-BL11020, A1420 | 243.5d | 0d | Excavation [10] | Arch |

| ID | WBS | Activity | Duration | Start | Finish | Predecessors | Total float | Free float | Resources | Engineering |
| --- | --- | --- | --- | --- | --- | --- | --- | --- | --- | --- |
|  | 2 | **Approval** |  | 2014-06-22 | 2014-08-25 |  |  |  |  |  |
| ENG-DS-APP-BL11000 |  | Ground Floor | 14d | 2014-06-22 | 2014-07-12 | ENG-DS-SUB-BL11000 | 323.5d | 231d | Excavation [14] | Arch |
| ENG-DS-APP-BL11010 |  | First Floor | 14d | 2014-07-05 | 2014-08-02 | ENG-DS-SUB-BL11010 | 313.5d | 221d | Excavation [14] | Arch |
| ENG-DS-APP-BL11020 |  | 2nd to 6th Floor | 14d | 2014-07-25 | 2014-08-13 | ENG-DS-SUB-BL11020 | 303.5d | 211d | Excavation [14] | Arch |
| ENG-DS-APP-BL11030 |  | Roof Floor | 14d | 2014-08-10 | 2014-08-25 | ENG-DS-SUB-BL11030 | 293.5d | 201d | Excavation [14] | Arch |
|  | 7 | **Stair Case** |  | 2014-04-12 | 2014-05-10 |  |  |  |  |  |
|  | 1 | **Submission** |  | 2014-04-12 | 2014-04-22 |  |  |  |  |  |
| ENG-SC-SUB-BL11000 |  | Stair Detail | 10d | 2014-04-12 | 2014-04-22 | ENG-BW-SUB-BL11030 | 289d | 0d | Excavation [10] | Arch |
|  | 2 | **Approval** |  | 2014-04-23 | 2014-05-10 |  |  |  |  |  |
| ENG-SC-APP-BL11000 |  | Stair Detail | 14d | 2014-04-23 | 2014-05-10 | ENG-SC-SUB-BL11000 | 357.5d | 256d | Excavation [14] | Arch |
|  | 8 | **Floor Tiling** |  | 2014-04-23 | 2014-06-14 |  |  |  |  |  |
|  | 1 | **Submission** |  | 2014-04-23 | 2014-05-28 |  |  |  |  |  |
| ENG-FT-SUB-BL11000 |  | Ground Floor | 10d | 2014-04-23 | 2014-05-05 | ENG-SC-SUB-BL11000 | 289d | 0d | Excavation [10] | Arch |
| ENG-FT-SUB-BL11010 |  | First Floor | 10d | 2014-05-06 | 2014-05-17 | ENG-FT-SUB-BL11000 | 289d | 0d | Excavation [10] | Arch |
| ENG-FT-SUB-BL11020 |  | 2nd to 6th Floor | 10d | 2014-05-18 | 2014-05-28 | ENG-FT-SUB-BL11010 | 289d | 0d | Excavation [10] | Arch |
|  | 2 | **Approval** |  | 2014-05-06 | 2014-06-14 |  |  |  |  |  |
| ENG-FT-APP-BL11000 |  | Ground Floor | 14d | 2014-05-06 | 2014-05-21 | ENG-FT-SUB-BL11000 | 309.5d | 208d | Excavation [14] | Arch |
| ENG-FT-APP-BL11010 |  | First Floor | 14d | 2014-05-18 | 2014-06-02 | ENG-FT-SUB-BL11010 | 299.5d | 198d | Excavation [14] | Arch |
| ENG-FT-APP-BL11020 |  | 2nd to 6th Floor | 14d | 2014-05-29 | 2014-06-14 | ENG-FT-SUB-BL11020 | 289.5d | 188d | Excavation [14] | Arch |
|  | 3 | **Block 2** |  | 2014-03-25 | 2014-09-06 |  |  |  |  |  |
|  | 1 | **Blockwork** |  | 2014-03-25 | 2014-05-04 |  |  |  |  |  |
|  | 1 | **Submission** |  | 2014-03-25 | 2014-04-16 |  |  |  |  |  |
| ENG-BW-SUB-BL21000 |  | Ground Floor | 5d | 2014-03-25 | 2014-03-30 | ENG-BW-SUB-BL11000 | 196d | 0d | Excavation [5] | Arch |
| ENG-BW-SUB-BL21010 |  | First Floor | 5d | 2014-03-31 | 2014-04-05 | ENG-BW-SUB-BL11010 | 231d | 0d | Excavation [5] | Arch |
| ENG-BW-SUB-BL21020 |  | 2nd to 8th Floor | 5d | 2014-04-06 | 2014-04-10 | ENG-BW-SUB-BL11020 | 212d | 0d | Excavation [5] | Arch |
| ENG-BW-SUB-BL21030 |  | Roof | 5d | 2014-04-12 | 2014-04-16 | ENG-BW-SUB-BL11030 | 241d | 0d | Excavation [5] | Arch |

| ID | WBS | Activity | Duration | Start | Finish | Predecessors | Total float | Free float | Resources | Engineering |
| --- | --- | --- | --- | --- | --- | --- | --- | --- | --- | --- |
|  | 2 | **Approval** |  | 2014-03-31 | 2014-05-04 |  |  |  |  |  |
| ENG-BW-APP-BL21000 |  | Ground Floor | 14d | 2014-03-31 | 2014-04-15 | ENG-BW-SUB-BL21000 | 201d | 27d | Excavation [14] | Arch |
| ENG-BW-APP-BL21010 |  | First Floor | 14d | 2014-04-06 | 2014-04-21 | ENG-BW-SUB-BL21010 | 251d | 186d | Excavation [14] | Arch |
| ENG-BW-APP-BL21020 |  | 2nd to 8th Floor | 14d | 2014-04-12 | 2014-04-27 | ENG-BW-SUB-BL21020 | 246d | 181d | Excavation [14] | Arch |
| ENG-BW-APP-BL21030 |  | Roof | 14d | 2014-04-17 | 2014-05-04 | ENG-BW-SUB-BL21030 | 241d | 176d | Excavation [14] | Arch |
|  | 3 | **False Ceiling** |  | 2014-06-10 | 2014-08-26 |  |  |  |  |  |
|  | 1 | **Submission** |  | 2014-06-10 | 2014-08-10 |  |  |  |  |  |
| ENG-FC-SUB-BL21000 |  | Ground Floor | 10d | 2014-06-10 | 2014-06-22 | ENG-FC-SUB-BL11000 | 111d | 0d | Excavation [10] | Arch |
| ENG-FC-SUB-BL21010 |  | First Floor | 10d | 2014-06-23 | 2014-07-06 | ENG-FC-SUB-BL11010 | 139d | 0d | Excavation [10] | Arch |
| ENG-FC-SUB-BL21020 |  | 2nd to 8th Floor | 10d | 2014-07-07 | 2014-07-26 | ENG-FC-SUB-BL11020 | 141d | 0d | Excavation [10] | Arch |
| ENG-FC-SUB-BL21030 |  | Roof Floor | 10d | 2014-07-27 | 2014-08-10 | ENG-FC-SUB-BL11030 | 145d | 0d | Excavation [10] | Arch |
|  | 2 | **Approval** |  | 2014-06-23 | 2014-08-26 |  |  |  |  |  |
| ENG-FC-APP-BL21000 |  | Ground Floor | 14d | 2014-06-23 | 2014-07-14 | ENG-FC-SUB-BL21000 | 121d | 10d | Excavation [14] | Arch |
| ENG-FC-APP-BL21010 |  | First Floor | 14d | 2014-07-07 | 2014-08-03 | ENG-FC-SUB-BL21010 | 151d | 28d | Excavation [14] | Arch |
| ENG-FC-APP-BL21020 |  | 2nd to 8th Floor | 14d | 2014-07-27 | 2014-08-14 | ENG-FC-SUB-BL21020 | 141d | 18d | Excavation [14] | Arch |
| ENG-FC-APP-BL21030 |  | Roof Floor | 14d | 2014-08-11 | 2014-08-26 | ENG-FC-SUB-BL21030 | 145d | 33d | Excavation [14] | Arch |
|  | 4 | **Wet Areas** |  | 2014-06-16 | 2014-08-09 |  |  |  |  |  |
|  | 1 | **Submission** |  | 2014-06-16 | 2014-07-16 |  |  |  |  |  |
| ENG-WA-SUB-BL21000 |  | Ground Floor | 5d | 2014-06-16 | 2014-06-22 | ENG-WA-SUB-BL11000 | 167d | 0d | Excavation [5] | Arch |
| ENG-WA-SUB-BL21010 |  | First Floor | 5d | 2014-06-23 | 2014-06-28 | ENG-WA-SUB-BL11010 | 142d | 0d | Excavation [5] | Arch |
| ENG-WA-SUB-BL21020 |  | 2nd to 8th Floor | 5d | 2014-06-29 | 2014-07-06 | ENG-WA-SUB-BL11020 | 176d | 0d | Excavation [5] | Arch |
| ENG-WA-SUB-BL21030 |  | Roof Floor | 5d | 2014-07-07 | 2014-07-16 | ENG-WA-SUB-BL11030 | 171d | 0d | Excavation [5] | Arch |
|  | 2 | **Approval** |  | 2014-06-23 | 2014-08-09 |  |  |  |  |  |
| ENG-WA-APP-BL21000 |  | Ground Floor | 14d | 2014-06-23 | 2014-07-14 | ENG-WA-SUB-BL21000 | 186d | 121d | Excavation [14] | Arch |
| ENG-WA-APP-BL21010 |  | First Floor | 14d | 2014-06-29 | 2014-07-24 | ENG-WA-SUB-BL21010 | 181d | 116d | Excavation [14] | Arch |
| ENG-WA-APP-BL21020 |  | 2nd to 8th Floor | 14d | 2014-07-07 | 2014-08-03 | ENG-WA-SUB-BL21020 | 176d | 111d | Excavation [14] | Arch |
| ENG-WA-APP-BL21030 |  | Roof Floor | 14d | 2014-07-17 | 2014-08-09 | ENG-WA-SUB-BL21030 | 171d | 106d | Excavation [14] | Arch |

| ID | WBS | Activity | Duration | Start | Finish | Predecessors | Total float | Free float | Resources | Engineering |
| --- | --- | --- | --- | --- | --- | --- | --- | --- | --- | --- |
|  | 6 | **Door Schedule** |  | 2014-06-22 | 2014-09-06 |  |  |  |  |  |
|  | 1 | **Submission** |  | 2014-06-22 | 2014-08-20 |  |  |  |  |  |
| ENG-DS-SUB-BL21010 |  | Ground Floor | 10d | 2014-06-22 | 2014-07-04 | ENG-DS-SUB-BL11000 | 250d | 0d | Excavation [10] | Arch |
| ENG-DS-SUB-BL21020 |  | First Floor | 10d | 2014-07-05 | 2014-07-24 | ENG-DS-SUB-BL11010 | 317d | 0d | Excavation [10] | Arch |
| ENG-DS-SUB-BL21030 |  | 2nd to 8th Floor | 10d | 2014-07-25 | 2014-08-09 | ENG-DS-SUB-BL11020 | 307d | 0d | Excavation [10] | Arch |
| ENG-DS-SUB-BL21000 |  | Roof Floor | 10d | 2014-08-10 | 2014-08-20 | ENG-DS-SUB-BL11030 | 297d | 0d | Excavation [10] | Arch |
|  | 2 | **Approval** |  | 2014-07-05 | 2014-09-06 |  |  |  |  |  |
| ENG-DS-APP-BL21010 |  | Ground Floor | 14d | 2014-07-05 | 2014-08-02 | ENG-DS-SUB-BL21010 | 327d | 247d | Excavation [14] | Arch |
| ENG-DS-APP-BL21020 |  | First Floor | 14d | 2014-07-25 | 2014-08-13 | ENG-DS-SUB-BL21020 | 317d | 237d | Excavation [14] | Arch |
| ENG-DS-APP-BL21030 |  | 2nd to 8th Floor | 14d | 2014-08-10 | 2014-08-25 | ENG-DS-SUB-BL21030 | 307d | 227d | Excavation [14] | Arch |
| ENG-DS-APP-BL21000 |  | Roof Floor | 14d | 2014-08-21 | 2014-09-06 | ENG-DS-SUB-BL21000 | 297d | 217d | Excavation [14] | Arch |
|  | 7 | **Stair Case** |  | 2014-04-23 | 2014-05-21 |  |  |  |  |  |
|  | 1 | **Submission** |  | 2014-04-23 | 2014-05-05 |  |  |  |  |  |
| ENG-SC-SUB-BL21000 |  | Stair Detail | 10d | 2014-04-23 | 2014-05-05 | ENG-SC-SUB-BL11000 | 334d | 0d | Excavation [10] | Arch |
|  | 2 | **Approval** |  | 2014-05-06 | 2014-05-21 |  |  |  |  |  |
| ENG-SC-APP-BL21000 |  | Stair Detail | 14d | 2014-05-06 | 2014-05-21 | ENG-SC-SUB-BL21000 | 361d | 281d | Excavation [14] | Arch |
|  | 8 | **Floor Tiling** |  | 2014-05-06 | 2014-06-26 |  |  |  |  |  |
|  | 1 | **Submission** |  | 2014-05-06 | 2014-06-09 |  |  |  |  |  |
| ENG-FT-SUB-BL21000 |  | Ground Floor | 10d | 2014-05-06 | 2014-05-17 | ENG-FT-SUB-BL11000 | 303d | 0d | Excavation [10] | Arch |
| ENG-FT-SUB-BL21010 |  | First Floor | 10d | 2014-05-18 | 2014-05-28 | ENG-FT-SUB-BL11010 | 299d | 0d | Excavation [10] | Arch |
| ENG-FT-SUB-BL21020 |  | 2nd to 8th Floor | 10d | 2014-05-29 | 2014-06-09 | ENG-FT-SUB-BL11020 | 289d | 0d | Excavation [10] | Arch |
|  | 2 | **Approval** |  | 2014-05-18 | 2014-06-26 |  |  |  |  |  |
| ENG-FT-APP-BL21000 |  | Ground Floor | 14d | 2014-05-18 | 2014-06-02 | ENG-FT-SUB-BL21000 | 309d | 229d | Excavation [14] | Arch |
| ENG-FT-APP-BL21010 |  | First Floor | 14d | 2014-05-29 | 2014-06-14 | ENG-FT-SUB-BL21010 | 299d | 219d | Excavation [14] | Arch |
| ENG-FT-APP-BL21020 |  | 2nd to 8th Floor | 14d | 2014-06-10 | 2014-06-26 | ENG-FT-SUB-BL21020 | 289d | 209d | Excavation [14] | Arch |

| ID | WBS | Activity | Duration | Start | Finish | Predecessors | Total float | Free float | Resources | Engineering |
| --- | --- | --- | --- | --- | --- | --- | --- | --- | --- | --- |
|  | 4 | **Block 3** |  | 2014-03-31 | 2014-10-15 |  |  |  |  |  |
|  | 1 | **Blockwork** |  | 2014-03-31 | 2014-05-21 |  |  |  |  |  |
|  | 1 | **Submission** |  | 2014-03-31 | 2014-05-05 |  |  |  |  |  |
| ENG-BW-SUB-BL31000 |  | Ground Floor | 5d | 2014-03-31 | 2014-04-05 | ENG-BW-SUB-BL21000 | 196d | 0d | Excavation [5] | Arch |
| ENG-BW-SUB-BL31010 |  | First Floor | 5d | 2014-04-06 | 2014-04-10 | ENG-BW-SUB-BL21010 | 231d | 0d | Excavation [5] | Arch |
| ENG-BW-SUB-BL31020 |  | 2nd Floor | 5d | 2014-04-12 | 2014-04-16 | ENG-BW-SUB-BL21020 | 212d | 0d | Excavation [5] | Arch |
| ENG-BW-SUB-BL31040 |  | 3rd Floor | 5d | 2014-04-17 | 2014-04-22 | ENG-BW-SUB-BL31020 | 212d | 0d | Excavation [5] | Arch |
| ENG-BW-SUB-BL31050 |  | 4th to 10th Floor | 5d | 2014-04-23 | 2014-04-28 | ENG-BW-SUB-BL31040 | 212d | 0d | Excavation [5] | Arch |
| ENG-BW-SUB-BL31030 |  | Roof Floor | 5d | 2014-04-29 | 2014-05-05 | ENG-BW-SUB-BL31050 | 212d | 0d | Excavation [5] | Arch |
|  | 2 | **Approval** |  | 2014-04-06 | 2014-05-21 |  |  |  |  |  |
| ENG-BW-APP-BL31000 |  | Ground Floor | 14d | 2014-04-06 | 2014-04-21 | ENG-BW-SUB-BL31000 | 196d | 22d | Excavation [14] | Arch |
| ENG-BW-APP-BL31010 |  | First Floor | 14d | 2014-04-12 | 2014-04-27 | ENG-BW-SUB-BL31010 | 231d | 56d | Excavation [14] | Arch |
| ENG-BW-APP-BL31020 |  | 2nd Floor | 14d | 2014-04-17 | 2014-05-04 | ENG-BW-SUB-BL31020 | 226d | 51d | Excavation [14] | Arch |
| ENG-BW-APP-BL31040 |  | 3rd Floor | 14d | 2014-04-23 | 2014-05-10 | ENG-BW-SUB-BL31040 | 221d | 46d | Excavation [14] | Arch |
| ENG-BW-APP-BL31050 |  | 4th to 10th Floor | 14d | 2014-04-29 | 2014-05-15 | ENG-BW-SUB-BL31050 | 216d | 41d | Excavation [14] | Arch |
| ENG-BW-APP-BL31030 |  | Roof Floor | 14d | 2014-05-06 | 2014-05-21 | ENG-BW-SUB-BL31030 | 212d | 44d | Excavation [14] | Arch |
|  | 3 | **False Ceiling** |  | 2014-06-23 | 2014-09-30 |  |  |  |  |  |
|  | 1 | **Submission** |  | 2014-06-23 | 2014-09-14 |  |  |  |  |  |
| ENG-FC-SUB-BL31000 |  | Ground Floor | 10d | 2014-06-23 | 2014-07-06 | ENG-FC-SUB-BL21000 | 111d | 0d | Excavation [10] | Arch |
| ENG-FC-SUB-BL31010 |  | First Floor | 10d | 2014-07-07 | 2014-07-26 | ENG-FC-SUB-BL21010 | 139d | 0d | Excavation [10] | Arch |
| ENG-FC-SUB-BL31020 |  | 2nd Floor | 10d | 2014-07-27 | 2014-08-10 | ENG-FC-SUB-BL31010 | 139d | 0d | Excavation [10] | Arch |
| ENG-FC-SUB-BL31040 |  | 3rd Floor | 10d | 2014-08-11 | 2014-08-21 | ENG-FC-SUB-BL31020 | 139d | 0d | Excavation [10] | Arch |
| ENG-FC-SUB-BL31050 |  | 4th to 10th Floor | 10d | 2014-08-23 | 2014-09-02 | ENG-FC-SUB-BL31040 | 139d | 0d | Excavation [10] | Arch |
| ENG-FC-SUB-BL31030 |  | Roof Floor | 10d | 2014-09-03 | 2014-09-14 | ENG-FC-SUB-BL31050 | 229d | 0d | Excavation [10] | Arch |

| ID | WBS | Activity | Duration | Start | Finish | Predecessors | Total float | Free float | Resources | Engineering |
| --- | --- | --- | --- | --- | --- | --- | --- | --- | --- | --- |
|  | 2 | **Approval** |  | 2014-07-07 | 2014-09-30 |  |  |  |  |  |
| ENG-FC-APP-BL31000 |  | Ground Floor | 14d | 2014-07-07 | 2014-08-03 | ENG-FC-SUB-BL31000 | 111d | 0d | Excavation [14] | Arch |
| ENG-FC-APP-BL31010 |  | First Floor | 14d | 2014-07-27 | 2014-08-14 | ENG-FC-SUB-BL31010 | 169d | 32d | Excavation [14] | Arch |
| ENG-FC-APP-BL31020 |  | 2nd Floor | 14d | 2014-08-11 | 2014-08-26 | ENG-FC-SUB-BL31020 | 159d | 22d | Excavation [14] | Arch |
| ENG-FC-APP-BL31040 |  | 3rd Floor | 14d | 2014-08-23 | 2014-09-07 | ENG-FC-SUB-BL31040 | 149d | 12d | Excavation [14] | Arch |
| ENG-FC-APP-BL31050 |  | 4th to 10th Floor | 14d | 2014-09-03 | 2014-09-18 | ENG-FC-SUB-BL31050 | 139d | 2d | Excavation [14] | Arch |
| ENG-FC-APP-BL31030 |  | Roof Floor | 14d | 2014-09-15 | 2014-09-30 | ENG-FC-SUB-BL31030 | 229d | 27d | Excavation [14] | Arch |
|  | 4 | **Wet Areas** |  | 2014-06-23 | 2014-08-26 |  |  |  |  |  |
|  | 1 | **Submission** |  | 2014-06-23 | 2014-08-10 |  |  |  |  |  |
| ENG-WA-SUB-BL31000 |  | Ground Floor | 5d | 2014-06-23 | 2014-06-28 | ENG-WA-SUB-BL21000 | 167d | 0d | Excavation [5] | Arch |
| ENG-WA-SUB-BL31010 |  | First Floor | 5d | 2014-06-29 | 2014-07-06 | ENG-WA-SUB-BL21010 | 142d | 0d | Excavation [5] | Arch |
| ENG-WA-SUB-BL31020 |  | 2nd Floor | 5d | 2014-07-07 | 2014-07-16 | ENG-WA-SUB-BL31010 | 142d | 0d | Excavation [5] | Arch |
| ENG-WA-SUB-BL31040 |  | 3rd Floor | 5d | 2014-07-17 | 2014-07-26 | ENG-WA-SUB-BL31020 | 142d | 0d | Excavation [5] | Arch |
| ENG-WA-SUB-BL31050 |  | 4th to 10th Floor | 5d | 2014-07-27 | 2014-08-04 | ENG-WA-SUB-BL31040 | 142d | 0d | Excavation [5] | Arch |
| ENG-WA-SUB-BL31030 |  | Roof Floor | 5d | 2014-08-05 | 2014-08-10 | ENG-WA-SUB-BL31050 | 142d | 0d | Excavation [5] | Arch |
|  | 2 | **Approval** |  | 2014-06-29 | 2014-08-26 |  |  |  |  |  |
| ENG-WA-APP-BL31000 |  | Ground Floor | 14d | 2014-06-29 | 2014-07-24 | ENG-WA-SUB-BL31000 | 167d | 160d | Excavation [14] | Arch |
| ENG-WA-APP-BL31010 |  | First Floor | 14d | 2014-07-07 | 2014-08-03 | ENG-WA-SUB-BL31010 | 162d | 155d | Excavation [14] | Arch |
| ENG-WA-APP-BL31020 |  | 2nd Floor | 14d | 2014-07-17 | 2014-08-09 | ENG-WA-SUB-BL31020 | 157d | 150d | Excavation [14] | Arch |
| ENG-WA-APP-BL31040 |  | 3rd Floor | 14d | 2014-07-27 | 2014-08-14 | ENG-WA-SUB-BL31040 | 152d | 145d | Excavation [14] | Arch |
| ENG-WA-APP-BL31050 |  | 4th to 10th Floor | 14d | 2014-08-05 | 2014-08-20 | ENG-WA-SUB-BL31050 | 147d | 140d | Excavation [14] | Arch |
| ENG-WA-APP-BL31030 |  | Roof Floor | 14d | 2014-08-11 | 2014-08-26 | ENG-WA-SUB-BL31030 | 142d | 135d | Excavation [14] | Arch |
|  | 6 | **Door Schedule** |  | 2014-07-05 | 2014-10-15 |  |  |  |  |  |
|  | 1 | **Submission** |  | 2014-07-05 | 2014-09-24 |  |  |  |  |  |
| ENG-DS-SUB-BL31010 |  | Ground Floor | 10d | 2014-07-05 | 2014-07-24 | ENG-DS-SUB-BL21010 | 250d | 0d | Excavation [10] | Arch |
| ENG-DS-SUB-BL31020 |  | First Floor | 10d | 2014-07-25 | 2014-08-09 | ENG-DS-SUB-BL31010 | 250d | 0d | Excavation [10] | Arch |
| ENG-DS-SUB-BL31030 |  | 2nd Floor | 10d | 2014-08-10 | 2014-08-20 | ENG-DS-SUB-BL31020 | 250d | 0d | Excavation [10] | Arch |
| ENG-DS-SUB-BL31040 |  | 3rd Floor | 10d | 2014-08-21 | 2014-09-01 | ENG-DS-SUB-BL31030 | 250d | 0d | Excavation [10] | Arch |
| ENG-DS-SUB-BL31050 |  | 4th to 10th Floor | 10d | 2014-09-02 | 2014-09-13 | ENG-DS-SUB-BL31040 | 250d | 0d | Excavation [10] | Arch |
| ENG-DS-SUB-BL31000 |  | Roof Floor | 10d | 2014-09-14 | 2014-09-24 | ENG-DS-SUB-BL31050 | 250d | 0d | Excavation [10] | Arch |

| ID | WBS | Activity | Duration | Start | Finish | Predecessors | Total float | Free float | Resources | Engineering |
| --- | --- | --- | --- | --- | --- | --- | --- | --- | --- | --- |
|  | 2 | **Approval** |  | 2014-07-25 | 2014-10-15 |  |  |  |  |  |
| ENG-DS-APP-BL31010 |  | Ground Floor | 14d | 2014-07-25 | 2014-08-13 | ENG-DS-SUB-BL31010 | 300d | 261d | Excavation [14] | Arch |
| ENG-DS-APP-BL31020 |  | First Floor | 14d | 2014-08-10 | 2014-08-25 | ENG-DS-SUB-BL31020 | 290d | 251d | Excavation [14] | Arch |
| ENG-DS-APP-BL31030 |  | 2nd Floor | 14d | 2014-08-21 | 2014-09-06 | ENG-DS-SUB-BL31030 | 280d | 241d | Excavation [14] | Arch |
| ENG-DS-APP-BL31040 |  | 3rd Floor | 14d | 2014-09-02 | 2014-09-17 | ENG-DS-SUB-BL31040 | 270d | 231d | Excavation [14] | Arch |
| ENG-DS-APP-BL31050 |  | 4th to 10th Floor | 14d | 2014-09-14 | 2014-09-29 | ENG-DS-SUB-BL31050 | 260d | 221d | Excavation [14] | Arch |
| ENG-DS-APP-BL31000 |  | Roof Floor | 14d | 2014-09-25 | 2014-10-15 | ENG-DS-SUB-BL31000 | 250d | 211d | Excavation [14] | Arch |
|  | 7 | **Stair Case** |  | 2014-05-06 | 2014-06-02 |  |  |  |  |  |
|  | 1 | **Submission** |  | 2014-05-06 | 2014-05-17 |  |  |  |  |  |
| ENG-SC-SUB-BL31000 |  | Stair Detail | 10d | 2014-05-06 | 2014-05-17 | ENG-SC-SUB-BL21000 | 334d | 0d | Excavation [10] | Arch |
|  | 2 | **Approval** |  | 2014-05-18 | 2014-06-02 |  |  |  |  |  |
| ENG-SC-APP-BL31000 |  | Stair Detail | 14d | 2014-05-18 | 2014-06-02 | ENG-SC-SUB-BL31000 | 334d | 295d | Excavation [14] | Arch |
|  | 8 | **Floor Tiling** |  | 2014-05-18 | 2014-08-14 |  |  |  |  |  |
|  | 1 | **Submission** |  | 2014-05-18 | 2014-07-26 |  |  |  |  |  |
| ENG-FT-SUB-BL31000 |  | Ground Floor | 10d | 2014-05-18 | 2014-05-28 | ENG-FT-SUB-BL21000 | 303d | 0d | Excavation [10] | Arch |
| ENG-FT-SUB-BL31010 |  | First Floor | 10d | 2014-05-29 | 2014-06-09 | ENG-FT-SUB-BL31000 | 303d | 0d | Excavation [10] | Arch |
| ENG-FT-SUB-BL31020 |  | 2nd Floor | 10d | 2014-06-10 | 2014-06-22 | ENG-FT-SUB-BL31010 | 303d | 0d | Excavation [10] | Arch |
| ENG-FT-SUB-BL31030 |  | 3rd Floor | 10d | 2014-06-23 | 2014-07-06 | ENG-FT-SUB-BL31020 | 303d | 0d | Excavation [10] | Arch |
| ENG-FT-SUB-BL31040 |  | 4th to 10th Floor | 10d | 2014-07-07 | 2014-07-26 | ENG-FT-SUB-BL31030 | 303d | 0d | Excavation [10] | Arch |
|  | 2 | **Approval** |  | 2014-05-29 | 2014-08-14 |  |  |  |  |  |
| ENG-FT-APP-BL21030 |  | Ground Floor | 14d | 2014-05-29 | 2014-06-14 | ENG-FT-SUB-BL31000 | 343d | 265d | Excavation [14] | Arch |
| ENG-FT-APP-BL21040 |  | First Floor | 14d | 2014-06-10 | 2014-06-26 | ENG-FT-SUB-BL31010 | 333d | 255d | Excavation [14] | Arch |
| ENG-FT-APP-BL21050 |  | 2nd Floor | 14d | 2014-06-23 | 2014-07-14 | ENG-FT-SUB-BL31020 | 323d | 245d | Excavation [14] | Arch |
| ENG-FT-APP-BL21060 |  | 3rd Floor | 14d | 2014-07-07 | 2014-08-03 | ENG-FT-SUB-BL31030 | 313d | 235d | Excavation [14] | Arch |
| ENG-FT-APP-BL21070 |  | 4th to 10th Floor | 14d | 2014-07-27 | 2014-08-14 | ENG-FT-SUB-BL31040 | 303d | 225d | Excavation [14] | Arch |

| ID | WBS | Activity | Duration | Start | Finish | Predecessors | Total float | Free float | Calendar | Resources | Responsibility |
| --- | --- | --- | --- | --- | --- | --- | --- | --- | --- | --- | --- |
|  | 3 | **MEP Shop Drawings** |  | 2014-02-01 | 2015-02-15 |  |  |  |  |  |  |
|  | 1 | **Mechanical System** |  | 2014-02-01 | 2015-02-15 |  |  |  |  |  |  |
|  | 2 | **HVAC System Drawings** |  | 2014-04-16 | 2015-02-15 |  |  |  |  |  |  |
|  | 1 | **HVAC System Drawings Submittal** |  | 2014-04-16 | 2015-01-29 |  |  |  |  |  |  |
| OFF-ENG-MEP-AC1000 |  | 2nd Basement HVAC Layout Submittal (Block 1,2,3) | 14d | 2014-04-16 | 2014-05-01 | GEN1000 FS+28d, ENG-BW-APP-POD1000 FS+10d | 184d | 0d | - Standard 6 day\8hrs With Holiday. | Excavation [14] | MEP |
| OFF-ENG-MEP-AC1010 |  | 1st Basement HVAC Layout Submittal (Block 1,2,3) | 14d | 2014-05-03 | 2014-05-18 | OFF-ENG-MEP-AC1000 | 184d | 0d | - Standard 6 day\8hrs With Holiday. | Excavation [14] | MEP |
| OFF-ENG-MEP-AC1020 |  | Ground Floor HVAC Layout Submittal (Block 1,2,3) | 14d | 2014-08-04 | 2014-08-19 | OFF-ENG-MEP-AC1010, ENG-FC-APP-BL11000, ENG-FC-APP-BL21000, ENG-FC-APP-BL31000 | 118d | 0d | - Standard 6 day\8hrs With Holiday. | Excavation [14] | MEP |
| OFF-ENG-MEP-AC1030 |  | Level 1 to Level 6 Block [1] HVAC Layout Submittal | 14d | 2014-08-20 | 2014-09-04 | OFF-ENG-MEP-AC1020, ENG-FC-APP-BL11010, ENG-FC-APP-BL11020 | 118d | 0d | - Standard 6 day\8hrs With Holiday. | Excavation [14] | MEP |
| OFF-ENG-MEP-AC1040 |  | Level 7 Block [1] HVAC Layout Submittal | 14d | 2014-09-06 | 2014-09-21 | OFF-ENG-MEP-AC1030, ENG-FC-APP-BL11030 | 118d | 0d | - Standard 6 day\8hrs With Holiday. | Excavation [14] | MEP |
| OFF-ENG-MEP-AC1050 |  | Level 1 to Level 8 Block [2] HVAC Layout Submittal | 14d | 2014-09-22 | 2014-10-07 | OFF-ENG-MEP-AC1040, ENG-FC-APP-BL21010, ENG-FC-APP-BL21020 | 118d | 0d | - Standard 6 day\8hrs With Holiday. | Excavation [14] | MEP |
| OFF-ENG-MEP-AC1060 |  | Level 9 Block [2] HVAC Layout Submittal | 14d | 2014-10-08 | 2014-10-23 | OFF-ENG-MEP-AC1050, ENG-FC-APP-BL21030 | 118d | 0d | - Standard 6 day\8hrs With Holiday. | Excavation [14] | MEP |
| OFF-ENG-MEP-AC1070 |  | Level 1 to Level 10 Block [3] HVAC Layout Submittal | 14d | 2014-10-25 | 2014-11-09 | OFF-ENG-MEP-AC1060, ENG-FC-APP-BL31010, ENG-FC-APP-BL31020, ENG-FC-APP-BL31040, ENG-FC-APP-BL31050 | 118d | 0d | - Standard 6 day\8hrs With Holiday. | Excavation [14] | MEP |
| OFF-ENG-MEP-AC1080 |  | Level 11 Block [1] HVAC Layout Submittal | 14d | 2014-11-10 | 2014-11-25 | OFF-ENG-MEP-AC1070, ENG-FC-APP-BL31030 | 284d | 0d | - Standard 6 day\8hrs With Holiday. | Excavation [14] | MEP |
| OFF-ENG-MEP-AC1090 |  | HVAC Schematic Layout and Riser Diagram (Piping ) Block ( 1,2,3 ) Submittal | 14d | 2014-11-26 | 2014-12-11 | OFF-ENG-MEP-AC1080 | 284d | 0d | - Standard 6 day\8hrs With Holiday. | Excavation [14] | MEP |
| OFF-ENG-MEP-AC1100 |  | Wet Area Extract Riser Diagram Block ( 1,2,3 ) Submittal | 14d | 2014-12-13 | 2014-12-28 | OFF-ENG-MEP-AC1090 | 284d | 0d | - Standard 6 day\8hrs With Holiday. | Excavation [14] | MEP |
| OFF-ENG-MEP-AC1110 |  | Fresh Air and Extract Air for Basement Ventilation Block ( 1,2,3 ) Submittal | 14d | 2014-12-29 | 2015-01-13 | OFF-ENG-MEP-AC1100 | 284d | 0d | - Standard 6 day\8hrs With Holiday. | Excavation [14] | MEP |
| OFF-ENG-MEP-AC1120 |  | HVAC Typical Installation Details Layout Block ( 1,2,3 ) Submittal | 14d | 2015-01-14 | 2015-01-29 | OFF-ENG-MEP-AC1110 | 284d | 0d | - Standard 6 day\8hrs With Holiday. | Excavation [14] | MEP |
|  | 2 | **HVAC System Drawings Approval** |  | 2014-05-03 | 2015-02-15 |  |  |  |  |  |  |
| OFF-ENG-MEP-AC1130 |  | 2nd Basement HVAC Layout Approval (Block 1,2,3) | 14d | 2014-05-03 | 2014-05-18 | OFF-ENG-MEP-AC1000 | 220d | 84d | - Standard 6 day\8hrs With Holiday. | Excavation [14] | MEP |
| OFF-ENG-MEP-AC1140 |  | 1st Basement HVAC Layout Approval (Block 1,2,3) | 14d | 2014-05-19 | 2014-06-03 | OFF-ENG-MEP-AC1010 | 227d | 116d | - Standard 6 day\8hrs With Holiday. | Excavation [14] | MEP |
| OFF-ENG-MEP-AC1150 |  | Ground Floor HVAC Layout Approval (Block 1,2,3) | 14d | 2014-08-20 | 2014-09-04 | OFF-ENG-MEP-AC1020 | 167d | 80d | - Standard 6 day\8hrs With Holiday. | Excavation [14] | MEP |
| OFF-ENG-MEP-AC1160 |  | Level 1 to Level 6 Block [1] HVAC Layout Approval | 14d | 2014-09-06 | 2014-09-21 | OFF-ENG-MEP-AC1030 | 239d | 92d | - Standard 6 day\8hrs With Holiday. | Excavation [14] | MEP |
| OFF-ENG-MEP-AC1170 |  | Level 7 Block [1] HVAC Layout Approval | 14d | 2014-09-22 | 2014-10-07 | OFF-ENG-MEP-AC1040 | 326d | 248d | - Standard 6 day\8hrs With Holiday. | Excavation [14] | MEP |
| OFF-ENG-MEP-AC1180 |  | Level 1 to Level 8 Block [2] HVAC Layout Approval | 14d | 2014-10-08 | 2014-10-23 | OFF-ENG-MEP-AC1050 | 169d | 87d | - Standard 6 day\8hrs With Holiday. | Excavation [14] | MEP |
| OFF-ENG-MEP-AC1190 |  | Level 9 Block [2] HVAC Layout Approval | 14d | 2014-10-25 | 2014-11-09 | OFF-ENG-MEP-AC1060 | 294d | 273d | - Standard 6 day\8hrs With Holiday. | Excavation [14] | MEP |
| OFF-ENG-MEP-AC1200 |  | Level 1 to Level 10 Block [3] HVAC Layout Approval | 14d | 2014-11-10 | 2014-11-25 | OFF-ENG-MEP-AC1070 | 118d | 103d | - Standard 6 day\8hrs With Holiday. | Excavation [14] | MEP |
| OFF-ENG-MEP-AC1210 |  | Level 11 Block [1] HVAC Layout Approval | 14d | 2014-11-26 | 2014-12-11 | OFF-ENG-MEP-AC1080 | 311d |  | - Standard 6 day\8hrs With Holiday. | Excavation [14] | MEP |
| OFF-ENG-MEP-AC1220 |  | HVAC Schematic Layout and Riser Diagram (Piping ) Block ( 1,2,3 ) Approval | 14d | 2014-12-13 | 2014-12-28 | OFF-ENG-MEP-AC1090 | 322d | 173d | - Standard 6 day\8hrs With Holiday. | Excavation [14] | MEP |
| OFF-ENG-MEP-AC1230 |  | Wet Area Extract Riser Diagram Block ( 1,2,3 ) Approval | 14d | 2014-12-29 | 2015-01-13 | OFF-ENG-MEP-AC1100 | 320d | 154d | - Standard 6 day\8hrs With Holiday. | Excavation [14] | MEP |
| OFF-ENG-MEP-AC1240 |  | Fresh Air and Extract Air for Basement Ventilation Block ( 1,2,3 ) Approval | 14d | 2015-01-14 | 2015-01-29 | OFF-ENG-MEP-AC1110 | 310d | 140d | - Standard 6 day\8hrs With Holiday. | Excavation [14] | MEP |
| OFF-ENG-MEP-AC1250 |  | HVAC Typical Installation Details Layout Block ( 1,2,3 ) Approval | 14d | 2015-01-31 | 2015-02-15 | OFF-ENG-MEP-AC1120 | 284d | 126d | - Standard 6 day\8hrs With Holiday. | Excavation [14] | MEP |

| ID | WBS | Activity | Duration | Start | Finish | Predecessors | Total float | Free float | Calendar | Resources | Responsibility |
| --- | --- | --- | --- | --- | --- | --- | --- | --- | --- | --- | --- |
|  | 3 | **Drainage System Drawings** |  | 2014-02-01 | 2014-11-25 |  |  |  |  |  |  |
|  | 1 | **Drainage System Drawings Submittal** |  | 2014-02-01 | 2014-11-09 |  |  |  |  |  |  |
| OFF-ENG-MEP-DR1000 |  | Raft Under Ground Drainage Layout Block (1,2,3) Submittal | 14d | 2014-02-01 | 2014-02-16 | GEN1000 | 18d | 0d | - Standard 6 day\8hrs With Holiday. | Excavation [14] | MEP |
| OFF-ENG-MEP-DR1010 |  | 2nd Basement Drainage Layout Submittal (Block 1,2,3) | 14d | 2014-04-16 | 2014-05-01 | OFF-ENG-MEP-DR1000, ENG-STR-BL1-APP100, ENG-STR-BL1-APP110, OFF-ENG-MEP-AC1000 SS, ENG-STR-APP170 | 221d | 0d | - Standard 6 day\8hrs With Holiday. | Excavation [14] | MEP |
| OFF-ENG-MEP-DR1020 |  | 1st Basement Drainage Layout Submittal (Block 1,2,3) | 14d | 2014-05-03 | 2014-05-18 | OFF-ENG-MEP-DR1010 | 221d | 0d | - Standard 6 day\8hrs With Holiday. | Excavation [14] | MEP |
| OFF-ENG-MEP-DR1030 |  | Ground Floor Drainage Layout Submittal (Block 1,2,3) | 14d | 2014-08-04 | 2014-08-19 | OFF-ENG-MEP-DR1020, ENG-FC-SUB-BL11000, ENG-FC-APP-BL21000, ENG-FC-APP-BL31000, ENG-FC-APP-BL11000 | 155d | 0d | - Standard 6 day\8hrs With Holiday. | Excavation [14] | MEP |
| OFF-ENG-MEP-DR1040 |  | Level 1 to Level 7 Block [1] Drainage Layout Submittal | 14d | 2014-08-20 | 2014-09-04 | OFF-ENG-MEP-DR1030, ENG-FC-SUB-BL11010, ENG-FC-SUB-BL11020, ENG-FC-APP-BL11010, ENG-FC-APP-BL11020 | 155d | 0d | - Standard 6 day\8hrs With Holiday. | Excavation [14] | MEP |
| OFF-ENG-MEP-DR1050 |  | Level 1 to Level 9 Block [2] Drainage Layout Submittal | 14d | 2014-09-06 | 2014-09-21 | OFF-ENG-MEP-DR1040, ENG-FC-APP-BL21010, ENG-FC-APP-BL21020 | 155d | 0d | - Standard 6 day\8hrs With Holiday. | Excavation [14] | MEP |
| OFF-ENG-MEP-DR1060 |  | Level 1 to Level 11 Block [3] Drainage Layout Submittal | 14d | 2014-09-22 | 2014-10-07 | OFF-ENG-MEP-DR1050, ENG-FC-APP-BL31010, ENG-FC-APP-BL31020, ENG-FC-APP-BL31040, ENG-FC-APP-BL31050 | 155d | 0d | - Standard 6 day\8hrs With Holiday. | Excavation [14] | MEP |
| OFF-ENG-MEP-DR1070 |  | Drainage Schematic Layout and Riser Diagram Block ( 1,2,3 ) Submittal | 14d | 2014-10-08 | 2014-10-23 | OFF-ENG-MEP-DR1060 | 341d | 0d | - Standard 6 day\8hrs With Holiday. | Excavation [14] | MEP |
| OFF-ENG-MEP-DR1080 |  | Drainage Typical Installation Details Layout Block ( 1,2,3 ) Submittal | 14d | 2014-10-25 | 2014-11-09 | OFF-ENG-MEP-DR1070 | 341d | 0d | - Standard 6 day\8hrs With Holiday. | Excavation [14] | MEP |
|  | 2 | **Drainage System Drawings Approval** |  | 2014-02-17 | 2014-11-25 |  |  |  |  |  |  |
| OFF-ENG-MEP-DR1090 |  | Raft Under Ground Drainage Layout Block (1,2,3) Approval | 14d | 2014-02-17 | 2014-03-04 | OFF-ENG-MEP-DR1000 | 18d |  | - Standard 6 day\8hrs With Holiday. | Excavation [14] | MEP |
| OFF-ENG-MEP-DR1100 |  | 2nd Basement Drainage Layout Approval (Block 1,2,3) | 14d | 2014-05-03 | 2014-05-18 | OFF-ENG-MEP-DR1010 | 224d | 84d | - Standard 6 day\8hrs With Holiday. | Excavation [14] | MEP |
| OFF-ENG-MEP-DR1110 |  | 1st Basement Drainage Layout Approval (Block 1,2,3) | 14d | 2014-05-19 | 2014-06-03 | OFF-ENG-MEP-DR1020 | 231d | 116d | - Standard 6 day\8hrs With Holiday. | Excavation [14] | MEP |
| OFF-ENG-MEP-DR1120 |  | Ground Floor Drainage Layout Approval (Block 1,2,3) | 14d | 2014-08-20 | 2014-09-04 | OFF-ENG-MEP-DR1030 | 171d | 104d | - Standard 6 day\8hrs With Holiday. | Excavation [14] | MEP |
| OFF-ENG-MEP-DR1130 |  | Level 1 to Level 7 Block [1] Drainage Layout Approval | 14d | 2014-09-06 | 2014-09-21 | OFF-ENG-MEP-DR1040 | 226d | 92d | - Standard 6 day\8hrs With Holiday. | Excavation [14] | MEP |
| OFF-ENG-MEP-DR1140 |  | Level 1 to Level 9 Block [2] Drainage Layout Approval | 14d | 2014-09-22 | 2014-10-07 | OFF-ENG-MEP-DR1050 | 164d | 110d | - Standard 6 day\8hrs With Holiday. | Excavation [14] | MEP |
| OFF-ENG-MEP-DR1150 |  | Level 1 to Level 11 Block [3] Drainage Layout Approval | 14d | 2014-10-08 | 2014-10-23 | OFF-ENG-MEP-DR1060 | 155d | 131d | - Standard 6 day\8hrs With Holiday. | Excavation [14] | MEP |
| OFF-ENG-MEP-DR1160 |  | Drainage Schematic Layout and Riser Diagram Block ( 1,2,3 ) Approval | 14d | 2014-10-25 | 2014-11-09 | OFF-ENG-MEP-DR1070 | 355d | 210d | - Standard 6 day\8hrs With Holiday. | Excavation [14] | MEP |
| OFF-ENG-MEP-DR1170 |  | Drainage Typical Installation Details Layout Block ( 1,2,3 ) Approval | 14d | 2014-11-10 | 2014-11-25 | OFF-ENG-MEP-DR1080 | 341d | 196d | - Standard 6 day\8hrs With Holiday. | Excavation [14] | MEP |
|  | 4 | **Water Supply System Drawings** |  | 2014-05-03 | 2014-12-11 |  |  |  |  |  |  |
|  | 1 | **Water Supply System Drawings Submittal** |  | 2014-05-03 | 2014-11-25 |  |  |  |  |  |  |
| OFF-ENG-MEP-WS1000 |  | 2nd Basement Water Supply Layout Submittal (Block 1,2,3) | 14d | 2014-05-03 | 2014-05-18 | ENG-STR-BL1-APP100, ENG-STR-BL1-APP110, OFF-ENG-MEP-AC1000 | 207d | 0d | - Standard 6 day\8hrs With Holiday. | Excavation [14] | MEP |
| OFF-ENG-MEP-WS1010 |  | 1st Basement Water Supply Layout Submittal (Block 1,2,3) | 14d | 2014-05-19 | 2014-06-03 | OFF-ENG-MEP-WS1000 | 207d | 0d | - Standard 6 day\8hrs With Holiday. | Excavation [14] | MEP |
| OFF-ENG-MEP-WS1020 |  | Ground Floor Water Supply Layout Submittal (Block 1,2,3) | 14d | 2014-08-04 | 2014-08-19 | OFF-ENG-MEP-WS1010, ENG-FC-APP-BL21000, ENG-FC-APP-BL31000, ENG-FC-APP-BL11000 | 155d | 0d | - Standard 6 day\8hrs With Holiday. | Excavation [14] | MEP |
| OFF-ENG-MEP-WS1030 |  | Level 1 to Level 7 Block [1] Water Supply Layout Submittal | 14d | 2014-08-20 | 2014-09-04 | OFF-ENG-MEP-WS1020, ENG-FC-APP-BL11010, ENG-FC-APP-BL11020 | 155d | 0d | - Standard 6 day\8hrs With Holiday. | Excavation [14] | MEP |
| OFF-ENG-MEP-WS1040 |  | Level 1 to Level 9 Block [2] Water Supply Layout Submittal | 14d | 2014-09-06 | 2014-09-21 | OFF-ENG-MEP-WS1030, ENG-FC-APP-BL21010, ENG-FC-APP-BL21020 | 155d | 0d | - Standard 6 day\8hrs With Holiday. | Excavation [14] | MEP |
| OFF-ENG-MEP-WS1050 |  | Level 1 to Level 11 Block [3] Water Supply Layout Submittal | 14d | 2014-09-22 | 2014-10-07 | OFF-ENG-MEP-WS1040, ENG-FC-APP-BL31010, ENG-FC-APP-BL31020, ENG-FC-APP-BL31040, ENG-FC-APP-BL31050 | 155d | 0d | - Standard 6 day\8hrs With Holiday. | Excavation [14] | MEP |
| OFF-ENG-MEP-WS1060 |  | Water Supply Schematic Layout and Riser Diagram Block ( 1,2,3 ) Submittal | 14d | 2014-10-08 | 2014-10-23 | OFF-ENG-MEP-WS1050 | 330d | 0d | - Standard 6 day\8hrs With Holiday. | Excavation [14] | MEP |
| OFF-ENG-MEP-WS1070 |  | Water Supply Typical Installation Details Layout Block ( 1,2,3 ) Submittal | 14d | 2014-10-25 | 2014-11-09 | OFF-ENG-MEP-WS1060 | 330d | 0d | - Standard 6 day\8hrs With Holiday. | Excavation [14] | MEP |
| OFF-ENG-MEP-WS1080 |  | Pump Room Water Supply Details Layout Submittal | 14d | 2014-11-10 | 2014-11-25 | OFF-ENG-MEP-WS1070 | 330d | 0d | - Standard 6 day\8hrs With Holiday. | Excavation [14] | MEP |

| ID | WBS | Activity | Duration | Start | Finish | Predecessors | Total float | Free float | Calendar | Resources | Responsibility |
| --- | --- | --- | --- | --- | --- | --- | --- | --- | --- | --- | --- |
|  | 2 | **Water Supply System Drawings Approval** |  | 2014-05-19 | 2014-12-11 |  |  |  |  |  |  |
| OFF-ENG-MEP-WS1090 |  | 2nd Basement Water Supply Layout Approval (Block 1,2,3) | 14d | 2014-05-19 | 2014-06-03 | OFF-ENG-MEP-WS1000 | 210d | 70d | - Standard 6 day\8hrs With Holiday. | Excavation [14] | MEP |
| OFF-ENG-MEP-WS1100 |  | 1st Basement Water Supply Layout Approval (Block 1,2,3) | 14d | 2014-06-04 | 2014-06-19 | OFF-ENG-MEP-WS1010 | 217d | 102d | - Standard 6 day\8hrs With Holiday. | Excavation [14] | MEP |
| OFF-ENG-MEP-WS1110 |  | Ground Floor Water Supply Layout Approval (Block 1,2,3) | 14d | 2014-08-20 | 2014-09-04 | OFF-ENG-MEP-WS1020 | 171d | 80d | - Standard 6 day\8hrs With Holiday. | Excavation [14] | MEP |
| OFF-ENG-MEP-WS1120 |  | Level 1 to Level 7 Block [1] Water Supply Layout Approval | 14d | 2014-09-06 | 2014-09-21 | OFF-ENG-MEP-WS1030 | 226d | 92d | - Standard 6 day\8hrs With Holiday. | Excavation [14] | MEP |
| OFF-ENG-MEP-WS1130 |  | Level 1 to Level 9 Block [2] Water Supply Layout Approval | 14d | 2014-09-22 | 2014-10-07 | OFF-ENG-MEP-WS1040 | 164d | 110d | - Standard 6 day\8hrs With Holiday. | Excavation [14] | MEP |
| OFF-ENG-MEP-WS1140 |  | Level 1 to Level 11 Block [3] Water Supply Layout Approval | 14d | 2014-10-08 | 2014-10-23 | OFF-ENG-MEP-WS1050 | 155d | 131d | - Standard 6 day\8hrs With Holiday. | Excavation [14] | MEP |
| OFF-ENG-MEP-WS1150 |  | Water Supply Schematic Layout and Riser Diagram Block ( 1,2,3 ) Approval | 14d | 2014-10-25 | 2014-11-09 | OFF-ENG-MEP-WS1060 | 352d | 210d | - Standard 6 day\8hrs With Holiday. | Excavation [14] | MEP |
| OFF-ENG-MEP-WS1160 |  | Water Supply Typical Installation Details Layout Block ( 1,2,3 ) Approval | 14d | 2014-11-10 | 2014-11-25 | OFF-ENG-MEP-WS1070 | 344d | 94d | - Standard 6 day\8hrs With Holiday. | Excavation [14] | MEP |
| OFF-ENG-MEP-WS1170 |  | Pump Room Water Supply Details Layout Approval | 14d | 2014-11-26 | 2014-12-11 | OFF-ENG-MEP-WS1080 | 330d | 80d | - Standard 6 day\8hrs With Holiday. | Excavation [14] | MEP |
|  | 1 | **Fire Fighting System Drawings** |  | 2014-03-12 | 2014-12-11 |  |  |  |  |  |  |
|  | 1 | **Fire Fighting System Drawings Submittal** |  | 2014-03-12 | 2014-11-25 |  |  |  |  |  |  |
| OFF-ENG-MEP-FF1000 |  | 2nd Basement Fire Fighting Layout Submittal (Block 1,2,3) | 14d | 2014-03-12 | 2014-03-27 | ENG-STR-BL1-APP100 SS, ENG-STR-BL1-APP110, GEN1030 | 303d | 0d | - Standard 6 day\8hrs With Holiday. | Excavation [14] | MEP |
| OFF-ENG-MEP-FF1010 |  | 1st Basement Fire Fighting Layout Submittal (Block 1,2,3) | 14d | 2014-03-29 | 2014-04-13 | OFF-ENG-MEP-FF1000 | 307.5d | 0d | - Standard 6 day\8hrs With Holiday. | Excavation [14] | MEP |
| OFF-ENG-MEP-FF1020 |  | Ground Floor Fire Fighting Layout Submittal (Block 1,2,3) | 14d | 2014-08-04 | 2014-08-19 | OFF-ENG-MEP-FF1010, ENG-FC-APP-BL21000, ENG-FC-APP-BL31000, ENG-FC-APP-BL11000 | 211.5d | 0d | - Standard 6 day\8hrs With Holiday. | Excavation [14] | MEP |
| OFF-ENG-MEP-FF1030 |  | Level 1 to Level 7 Block [1] Fire Fighting Layout Submittal | 14d | 2014-08-20 | 2014-09-04 | OFF-ENG-MEP-FF1020, ENG-FC-APP-BL11010, ENG-FC-APP-BL11020 | 211.5d | 0d | - Standard 6 day\8hrs With Holiday. | Excavation [14] | MEP |
| OFF-ENG-MEP-FF1040 |  | Level 1 to Level 9 Block [2] Fire Fighting Layout Submittal | 14d | 2014-09-06 | 2014-09-21 | OFF-ENG-MEP-FF1030, ENG-FC-APP-BL21010, ENG-FC-APP-BL21020 | 211.5d | 0d | - Standard 6 day\8hrs With Holiday. | Excavation [14] | MEP |
| OFF-ENG-MEP-FF1050 |  | Level 1 to Level 11 Block [3] Fire Fighting Layout Submittal | 14d | 2014-09-22 | 2014-10-07 | OFF-ENG-MEP-FF1040, ENG-FC-APP-BL31010, ENG-FC-APP-BL31020, ENG-FC-APP-BL31040, ENG-FC-APP-BL31050 | 211.5d | 0d | - Standard 6 day\8hrs With Holiday. | Excavation [14] | MEP |
| OFF-ENG-MEP-FF1060 |  | Fire Fighting Schematic Layout and Riser Diagram Block ( 1,2,3 ) Submittal | 14d | 2014-10-08 | 2014-10-23 | OFF-ENG-MEP-FF1050 | 211.5d | 0d | - Standard 6 day\8hrs With Holiday. | Excavation [14] | MEP |
| OFF-ENG-MEP-FF1070 |  | Fire Fighting Typical Installation Details Layout Block ( 1,2,3 ) Submittal | 14d | 2014-10-25 | 2014-11-09 | OFF-ENG-MEP-FF1060 | 211.5d | 0d | - Standard 6 day\8hrs With Holiday. | Excavation [14] | MEP |
| OFF-ENG-MEP-FF1080 |  | Pump Room Fire Fighting Details Layout Submittal | 14d | 2014-11-10 | 2014-11-25 | OFF-ENG-MEP-FF1070 | 321d | 0d | - Standard 6 day\8hrs With Holiday. | Excavation [14] | MEP |
|  | 2 | **Fire Fighting System Drawings Approval** |  | 2014-03-29 | 2014-12-11 |  |  |  |  |  |  |
| OFF-ENG-MEP-FF1090 |  | 2nd Basement Fire Fighting Layout Approval (Block 1,2,3) | 14d | 2014-03-29 | 2014-04-13 | OFF-ENG-MEP-FF1000 | 303d | 114d | - Standard 6 day\8hrs With Holiday. | Excavation [14] | MEP |
| OFF-ENG-MEP-FF1100 |  | 1st Basement Fire Fighting Layout Approval (Block 1,2,3) | 14d | 2014-04-14 | 2014-04-29 | OFF-ENG-MEP-FF1010 | 313d | 146d | - Standard 6 day\8hrs With Holiday. | Excavation [14] | MEP |
| OFF-ENG-MEP-FF1110 |  | Ground Floor Fire Fighting Layout Approval (Block 1,2,3) | 14d | 2014-08-20 | 2014-09-04 | OFF-ENG-MEP-FF1020 | 309.5d | 258d | - Standard 6 day\8hrs With Holiday. | Excavation [14] | MEP |
| OFF-ENG-MEP-FF1120 |  | Level 1 to Level 7 Block [1] Fire Fighting Layout Approval | 14d | 2014-09-06 | 2014-09-21 | OFF-ENG-MEP-FF1030 | 409d | 246d | - Standard 6 day\8hrs With Holiday. | Excavation [14] | MEP |
| OFF-ENG-MEP-FF1130 |  | Level 1 to Level 9 Block [2] Fire Fighting Layout Approval | 14d | 2014-09-22 | 2014-10-07 | OFF-ENG-MEP-FF1040 | 381d | 296d | - Standard 6 day\8hrs With Holiday. | Excavation [14] | MEP |
| OFF-ENG-MEP-FF1140 |  | Level 1 to Level 11 Block [3] Fire Fighting Layout Approval | 14d | 2014-10-08 | 2014-10-23 | OFF-ENG-MEP-FF1050 | 360d | 355d | - Standard 6 day\8hrs With Holiday. | Excavation [14] | MEP |
| OFF-ENG-MEP-FF1150 |  | Fire Fighting Schematic Layout and Riser Diagram Block ( 1,2,3 ) Approval | 14d | 2014-10-25 | 2014-11-09 | OFF-ENG-MEP-FF1060 | 225.5d | 173d | - Standard 6 day\8hrs With Holiday. | Excavation [14] | MEP |
| OFF-ENG-MEP-FF1160 |  | Fire Fighting Typical Installation Details Layout Block ( 1,2,3 ) Approval | 14d | 2014-11-10 | 2014-11-25 | OFF-ENG-MEP-FF1070 | 211.5d | 159d | - Standard 6 day\8hrs With Holiday. | Excavation [14] | MEP |
| OFF-ENG-MEP-FF1170 |  | Pump Room Fire Fighting Details Layout Approval | 14d | 2014-11-26 | 2014-12-11 | OFF-ENG-MEP-FF1080 | 321d | 27d | - Standard 6 day\8hrs With Holiday. | Excavation [14] | MEP |

| ID | WBS | Activity | Duration | Start | Finish | Predecessors | Total float | Free float | Calendar | Resources | Responsibility | MEP Systems |
| --- | --- | --- | --- | --- | --- | --- | --- | --- | --- | --- | --- | --- |
|  | 2 | **Electrical System** |  | 2014-02-05 | 2014-10-12 |  |  |  |  |  |  |  |
|  | 8 | **Builders Work Drawings** |  | 2014-02-05 | 2014-07-21 |  |  |  |  |  |  |  |
|  | 1 | **Builders Work Drawings Submittal** |  | 2014-02-05 | 2014-07-05 |  |  |  |  |  |  |  |
| ENGMEP8610 |  | Raft Builders Work Layout Block (1,2,3) Submittal | 14d | 2014-02-05 | 2014-02-20 | GEN1000 FS+4d | 14d | 0d | - Standard 6 day\8hrs With Holiday. | Excavation [14] | MEP | EL |
| ENGMEP8530 |  | 1st Basement Floor Slabs and 2nd Basement Core Wall Builders Work Layout Submittal (Block 1,2,3) | 14d | 2014-04-15 | 2014-04-30 | ENGMEP8610 FS+45d, GEN1020 | 62.25d | 0d | - Standard 6 day\8hrs With Holiday. | Excavation [14] | MEP | EL |
| ENGMEP8540 |  | Ground Floor Slabs and 1st Basement Core Wall Builders Work Layout Submittal (Block 1,2,3) | 14d | 2014-05-01 | 2014-05-17 | ENGMEP8530 | 91d | 0d | - Standard 6 day\8hrs With Holiday. | Excavation [14] | MEP | EL |
| ENGMEP8550 |  | Level 1 to Level 7 Block [1] Builders Work Layout Submittal | 14d | 2014-05-18 | 2014-06-02 | ENGMEP8540 | 110d | 0d | - Standard 6 day\8hrs With Holiday. | Excavation [14] | MEP | EL |
| ENGMEP8560 |  | Level 1 to Level 9 Block [2] Builders Work Layout Submittal | 14d | 2014-06-03 | 2014-06-18 | ENGMEP8550 | 110d | 0d | - Standard 6 day\8hrs With Holiday. | Excavation [14] | MEP | EL |
| ENGMEP8570 |  | Level 1 to Level 11 Block [3] Builders Work Layout Submittal | 14d | 2014-06-19 | 2014-07-05 | ENGMEP8560 | 116d | 0d | - Standard 6 day\8hrs With Holiday. | Excavation [14] | MEP | EL |
|  | 2 | **Builders Work Drawings Approval** |  | 2014-02-22 | 2014-07-21 |  |  |  |  |  |  |  |
| ENGMEP8700 |  | Raft Builders Work Layout Block (1,2,3) Approval | 14d | 2014-02-22 | 2014-03-09 | ENGMEP8610 | 14d |  | - Standard 6 day\8hrs With Holiday. | Excavation [14] | MEP | EL |
| ENGMEP8620 |  | 1st Basement Floor Slabs and 2nd Basement Core Wall Builders Work Layout Approval (Block 1,2,3) | 14d | 2014-05-01 | 2014-05-14 | ENGMEP8530 | 73.25d | 0d | 3- Glodal 7 day\8 hrs No Hoilday. | Excavation [14] | MEP | EL |
| ENGMEP8630 |  | Ground Floor Slabs and 1st Basement Core Wall Builders Work Layout Approval (Block 1,2,3) | 14d | 2014-05-18 | 2014-06-02 | ENGMEP8540 | 91d | 19d | - Standard 6 day\8hrs With Holiday. | Excavation [14] | MEP | EL |
| ENGMEP8640 |  | Level 1 to Level 7 Block [1] Builders Work Layout Approval | 14d | 2014-06-03 | 2014-06-18 | ENGMEP8550 | 127.5d | 57d | - Standard 6 day\8hrs With Holiday. | Excavation [14] | MEP | EL |
| ENGMEP8650 |  | Level 1 to Level 9 Block [2] Builders Work Layout Approval | 14d | 2014-06-19 | 2014-07-05 | ENGMEP8560 | 110d | 71d | - Standard 6 day\8hrs With Holiday. | Excavation [14] | MEP | EL |
| ENGMEP8660 |  | Level 1 to Level 11 Block [3] Builders Work Layout Approval | 14d | 2014-07-06 | 2014-07-21 | ENGMEP8570 | 116d | 108d | - Standard 6 day\8hrs With Holiday. | Excavation [14] | MEP | EL |
|  | 2 | **Power Drawings** |  | 2014-02-06 | 2014-10-12 |  |  |  |  |  |  |  |
|  | 1 | **Power Drawings Submittal** |  | 2014-02-06 | 2014-09-25 |  |  |  |  |  |  |  |
| ENGMEP8920 |  | 2nd Basement Earthing and Lighting Protection Layout Submittal (Block 1,2,3) | 14d | 2014-02-06 | 2014-02-22 | ENG-STR-APP110 SS | 13d | 0d | - Standard 6 day\8hrs With Holiday. | Excavation [14] | MEP | EL |
| ENGMEP8710 |  | 2nd Basement Power Layout Submittal (Block 1,2,3) | 14d | 2014-04-16 | 2014-05-01 | ENGMEP8920 FS+45d, ENG-STR-BL1-APP100, ENG-STR-BL1-APP110 | 166d | 0d | - Standard 6 day\8hrs With Holiday. | Excavation [14] | MEP | EL |
| ENGMEP8720 |  | 1st Basement Power Layout Submittal (Block 1,2,3) | 14d | 2014-05-03 | 2014-05-18 | ENGMEP8710 | 194d | 0d | - Standard 6 day\8hrs With Holiday. | Excavation [14] | MEP | EL |
| ENGMEP8730 |  | Ground Floor Power Layout Submittal (Block 1,2,3) | 14d | 2014-05-19 | 2014-06-03 | ENGMEP8720, ENG-BW-APP-BL31000, ENG-BW-APP-BL21000, ENG-BW-APP-BL11000, ENG-BW-APP-BL11000 FF | 194d | 0d | - Standard 6 day\8hrs With Holiday. | Excavation [14] | MEP | EL |
| ENGMEP8740 |  | Level 1 to Level 7 Block [1] Power Layout Submittal | 14d | 2014-06-04 | 2014-06-19 | ENGMEP8730, ENG-BW-APP-BL11010, ENG-BW-APP-BL11020 | 194d | 0d | - Standard 6 day\8hrs With Holiday. | Excavation [14] | MEP | EL |
| ENGMEP8750 |  | Level 1 to Level 9 Block [2] Power Layout Submittal | 14d | 2014-06-21 | 2014-07-06 | ENGMEP8740, ENG-BW-SUB-BL21010, ENG-BW-SUB-BL21020 | 194d | 0d | - Standard 6 day\8hrs With Holiday. | Excavation [14] | MEP | EL |
| ENGMEP8760 |  | Level 1 to Level 11 Block [3] Power Layout Submittal | 14d | 2014-07-07 | 2014-07-22 | ENGMEP8750, ENG-BW-APP-BL31010, ENG-BW-APP-BL31020, ENG-BW-APP-BL31040, ENG-BW-APP-BL31050 | 194d | 0d | - Standard 6 day\8hrs With Holiday. | Excavation [14] | MEP | EL |
| ENGMEP8770 |  | Roof Floor Block ( 1,2,3 ) Lighting Protection Layout Submittal | 14d | 2014-07-23 | 2014-08-07 | ENGMEP8760, ENG-BW-APP-BL31030, ENG-BW-SUB-BL21030, ENG-BW-APP-BL11030 | 286d | 0d | - Standard 6 day\8hrs With Holiday. | Excavation [14] | MEP | EL |
| ENGMEP8780 |  | Power Riser Diagram Block ( 1,2,3 ) Layout Submittal | 14d | 2014-08-09 | 2014-08-24 | ENGMEP8770 | 286d | 0d | - Standard 6 day\8hrs With Holiday. | Excavation [14] | MEP | EL |
| ENGMEP8790 |  | LV Room Details Block ( 1,2,3 ) Layout Submittal | 14d | 2014-08-25 | 2014-09-09 | ENGMEP8780 | 286d | 0d | - Standard 6 day\8hrs With Holiday. | Excavation [14] | MEP | EL |
| ENGMEP8800 |  | Substation Room Details Block ( 1,2,3 ) Layout Submittal | 14d | 2014-09-10 | 2014-09-25 | ENGMEP8790 | 286d | 0d | - Standard 6 day\8hrs With Holiday. | Excavation [14] | MEP | EL |

| ID | WBS | Activity | Duration | Start | Finish | Predecessors | Total float | Free float | Calendar | Resources | Responsibility | MEP Systems |
| --- | --- | --- | --- | --- | --- | --- | --- | --- | --- | --- | --- | --- |
|  | 2 | **Power Drawings Approval** |  | 2014-02-23 | 2014-10-12 |  |  |  |  |  |  |  |
| ENGMEP8910 |  | 2nd Basement Earthing and Lighting Protection Layout Approval (Block 1,2,3) | 14d | 2014-02-23 | 2014-03-10 | ENGMEP8920 | 13d |  | - Standard 6 day\8hrs With Holiday. | Excavation [14] | MEP | EL |
| ENGMEP8810 |  | 2nd Basement Power Layout Approval (Block 1,2,3) | 14d | 2014-05-03 | 2014-05-18 | ENGMEP8710 | 206d | 90d | - Standard 6 day\8hrs With Holiday. | Excavation [14] | MEP | EL |
| ENGMEP8820 |  | 1st Basement Power Layout Approval (Block 1,2,3) | 14d | 2014-05-19 | 2014-06-03 | ENGMEP8720 | 216d | 114d | - Standard 6 day\8hrs With Holiday. | Excavation [14] | MEP | EL |
| ENGMEP8830 |  | Ground Floor Power Layout Approval (Block 1,2,3) | 14d | 2014-06-04 | 2014-06-19 | ENGMEP8730 | 214d | 137d | - Standard 6 day\8hrs With Holiday. | Excavation [14] | MEP | EL |
| ENGMEP8840 |  | Level 1 to Level 7 Block [1] Power Layout Approval | 14d | 2014-06-21 | 2014-07-06 | ENGMEP8740 | 290d | 147d | - Standard 6 day\8hrs With Holiday. | Excavation [14] | MEP | EL |
| ENGMEP8850 |  | Level 1 to Level 9 Block [2] Power Layout Approval | 14d | 2014-07-07 | 2014-07-22 | ENGMEP8750 | 220d | 176d | - Standard 6 day\8hrs With Holiday. | Excavation [14] | MEP | EL |
| ENGMEP8860 |  | Level 1 to Level 11 Block [3] Power Layout Approval | 14d | 2014-07-23 | 2014-08-07 | ENGMEP8760 | 194d | 187d | - Standard 6 day\8hrs With Holiday. | Excavation [14] | MEP | EL |
| ENGMEP8870 |  | Roof Floor Block ( 1,2,3 ) Lighting Protection Layout Approval | 14d | 2014-08-09 | 2014-08-24 | ENGMEP8770 | 450d | 256d | - Standard 6 day\8hrs With Holiday. | Excavation [14] | MEP | EL |
| ENGMEP8880 |  | Power Riser Diagram Block ( 1,2,3 ) Layout Approval | 14d | 2014-08-25 | 2014-09-09 | ENGMEP8780, GEN1020 | 314d | 262d | - Standard 6 day\8hrs With Holiday. | Excavation [14] | MEP | EL |
| ENGMEP8890 |  | LV Room Details Block ( 1,2,3 ) Layout Approval | 14d | 2014-09-10 | 2014-09-25 | ENGMEP8790, GEN1020 | 300d | 248d | - Standard 6 day\8hrs With Holiday. | Excavation [14] | MEP | EL |
| ENGMEP8900 |  | Substation Room Details Block ( 1,2,3 ) Layout Approval | 14d | 2014-09-27 | 2014-10-12 | ENGMEP8800, GEN1020 | 286d | 234d | - Standard 6 day\8hrs With Holiday. | Excavation [14] | MEP | EL |
|  | 6 | **Lighting Drawings** |  | 2014-04-16 | 2014-08-07 |  |  |  |  |  |  |  |
|  | 1 | **Lighting Drawings Submittal** |  | 2014-04-16 | 2014-07-22 |  |  |  |  |  |  |  |
| ENGMEP8930 |  | 2nd Basement Lighting Layout Submittal (Block 1,2,3) | 14d | 2014-04-16 | 2014-05-01 | ENG-STR-BL1-APP100, ENG-STR-BL1-APP110, ENGMEP8710 SS | 166d | 0d | - Standard 6 day\8hrs With Holiday. | Excavation [14] | MEP | EL |
| ENGMEP8940 |  | 1st Basement Lighting Layout Submittal (Block 1,2,3) | 14d | 2014-05-03 | 2014-05-18 | ENGMEP8930 | 194d | 0d | - Standard 6 day\8hrs With Holiday. | Excavation [14] | MEP | EL |
| ENGMEP8950 |  | Ground Floor Lighting Layout Submittal (Block 1,2,3) | 14d | 2014-05-19 | 2014-06-03 | ENGMEP8940 | 194d | 0d | - Standard 6 day\8hrs With Holiday. | Excavation [14] | MEP | EL |
| ENGMEP8960 |  | Level 1 to Level 7 Block [1] Lighting Layout Submittal | 14d | 2014-06-04 | 2014-06-19 | ENGMEP8950 | 194d | 0d | - Standard 6 day\8hrs With Holiday. | Excavation [14] | MEP | EL |
| ENGMEP8970 |  | Level 1 to Level 9 Block [2] Lighting Layout Submittal | 14d | 2014-06-21 | 2014-07-06 | ENGMEP8960 | 194d | 0d | - Standard 6 day\8hrs With Holiday. | Excavation [14] | MEP | EL |
| ENGMEP8980 |  | Level 1 to Level 11 Block [3] Lighting Layout Submittal | 14d | 2014-07-07 | 2014-07-22 | ENGMEP8970 | 194d | 0d | - Standard 6 day\8hrs With Holiday. | Excavation [14] | MEP | EL |
|  | 2 | **Lighting Drawings Approval** |  | 2014-05-03 | 2014-08-07 |  |  |  |  |  |  |  |
| ENGMEP9030 |  | 2nd Basement Lighting Layout Approval (Block 1,2,3) | 14d | 2014-05-03 | 2014-05-18 | ENGMEP8930 | 206d | 90d | - Standard 6 day\8hrs With Holiday. | Excavation [14] | MEP | EL |
| ENGMEP9040 |  | 1st Basement Lighting Layout Approval (Block 1,2,3) | 14d | 2014-05-19 | 2014-06-03 | ENGMEP8940 | 216d | 114d | - Standard 6 day\8hrs With Holiday. | Excavation [14] | MEP | EL |
| ENGMEP9050 |  | Ground Floor Lighting Layout Approval (Block 1,2,3) | 14d | 2014-06-04 | 2014-06-19 | ENGMEP8950 | 214d | 137d | - Standard 6 day\8hrs With Holiday. | Excavation [14] | MEP | EL |
| ENGMEP9060 |  | Level 1 to Level 7 Block [1] Lighting Layout Approval | 14d | 2014-06-21 | 2014-07-06 | ENGMEP8960 | 290d | 147d | - Standard 6 day\8hrs With Holiday. | Excavation [14] | MEP | EL |
| ENGMEP9070 |  | Level 1 to Level 9 Block [2] Lighting Layout Approval | 14d | 2014-07-07 | 2014-07-22 | ENGMEP8970 | 220d | 176d | - Standard 6 day\8hrs With Holiday. | Excavation [14] | MEP | EL |
| ENGMEP9080 |  | Level 1 to Level 11 Block [3] Lighting Layout Approval | 14d | 2014-07-23 | 2014-08-07 | ENGMEP8980 | 194d | 187d | - Standard 6 day\8hrs With Holiday. | Excavation [14] | MEP | EL |

| ID | WBS | Activity | Duration | Start | Finish | Predecessors | Total float | Free float | Calendar | Resources | Responsibility | MEP Systems |
| --- | --- | --- | --- | --- | --- | --- | --- | --- | --- | --- | --- | --- |
|  | 10 | **Telephone & TV System Drawings** |  | 2014-05-03 | 2014-08-24 |  |  |  |  |  |  |  |
|  | 1 | **Telephone & TV System Drawings Submittal** |  | 2014-05-03 | 2014-08-07 |  |  |  |  |  |  |  |
| ENGMEP9400 |  | 2nd Basement Telephone & TV Layout Submittal (Block 1,2,3) | 14d | 2014-05-03 | 2014-05-18 | ENG-STR-BL1-APP100, ENG-STR-BL1-APP110, GEN1050, ENGMEP8930 | 166d | 0d | - Standard 6 day\8hrs With Holiday. | Excavation [14] | MEP | EL |
| ENGMEP9410 |  | 1st Basement Telephone & TV Layout Submittal (Block 1,2,3) | 14d | 2014-05-19 | 2014-06-03 | ENGMEP9400 | 180d | 0d | - Standard 6 day\8hrs With Holiday. | Excavation [14] | MEP | EL |
| ENGMEP9420 |  | Ground Floor Telephone & TV Layout Submittal (Block 1,2,3) | 14d | 2014-06-04 | 2014-06-19 | ENGMEP9410 | 180d | 0d | - Standard 6 day\8hrs With Holiday. | Excavation [14] | MEP | EL |
| ENGMEP9430 |  | Level 1 to Level 7 Block [1] Telephone & TV Layout Submittal | 14d | 2014-06-21 | 2014-07-06 | ENGMEP9420 | 180d | 0d | - Standard 6 day\8hrs With Holiday. | Excavation [14] | MEP | EL |
| ENGMEP9440 |  | Level 1 to Level 9 Block [2] Telephone & TV Layout Submittal | 14d | 2014-07-07 | 2014-07-22 | ENGMEP9430 | 180d | 0d | - Standard 6 day\8hrs With Holiday. | Excavation [14] | MEP | EL |
| ENGMEP9450 |  | Level 1 to Level 11 Block [3] Telephone & TV Layout Submittal | 14d | 2014-07-23 | 2014-08-07 | ENGMEP9440 | 180d | 0d | - Standard 6 day\8hrs With Holiday. | Excavation [14] | MEP | EL |
|  | 2 | **Telephone & TV System Drawings Approval** |  | 2014-05-19 | 2014-08-24 |  |  |  |  |  |  |  |
| ENGMEP9470 |  | 2nd Basement Telephone & TV Layout Approval (Block 1,2,3) | 14d | 2014-05-19 | 2014-06-03 | ENGMEP9400 | 192d | 76d | - Standard 6 day\8hrs With Holiday. | Excavation [14] | MEP | EL |
| ENGMEP9480 |  | 1st Basement Telephone & TV Layout Approval (Block 1,2,3) | 14d | 2014-06-04 | 2014-06-19 | ENGMEP9410 | 202d | 100d | - Standard 6 day\8hrs With Holiday. | Excavation [14] | MEP | EL |
| ENGMEP9490 |  | Ground Floor Telephone & TV Layout Approval (Block 1,2,3) | 14d | 2014-06-21 | 2014-07-06 | ENGMEP9420 | 200d | 123d | - Standard 6 day\8hrs With Holiday. | Excavation [14] | MEP | EL |
| ENGMEP9500 |  | Level 1 to Level 7 Block [1] Telephone & TV Layout Approval | 14d | 2014-07-07 | 2014-07-22 | ENGMEP9430 | 276d | 133d | - Standard 6 day\8hrs With Holiday. | Excavation [14] | MEP | EL |
| ENGMEP9510 |  | Level 1 to Level 9 Block [2] Telephone & TV Layout Approval | 14d | 2014-07-23 | 2014-08-07 | ENGMEP9440 | 206d | 162d | - Standard 6 day\8hrs With Holiday. | Excavation [14] | MEP | EL |
| ENGMEP9520 |  | Level 1 to Level 11 Block [3] Telephone & TV Layout Approval | 14d | 2014-08-09 | 2014-08-24 | ENGMEP9450 | 180d | 173d | - Standard 6 day\8hrs With Holiday. | Excavation [14] | MEP | EL |
|  | 3 | **Fire Alarm Drawings** |  | 2014-05-19 | 2014-09-09 |  |  |  |  |  |  |  |
|  | 1 | **Fire Alarm Drawings Submittal** |  | 2014-05-19 | 2014-08-24 |  |  |  |  |  |  |  |
| ENGMEP9090 |  | 2nd Basement Fire Alarm Layout Submittal (Block 1,2,3) | 14d | 2014-05-19 | 2014-06-03 | ENG-STR-BL1-APP100, ENG-STR-BL1-APP110, GEN1030, ENGMEP9400 | 166d | 0d | - Standard 6 day\8hrs With Holiday. | Excavation [14] | MEP | EL |
| ENGMEP9100 |  | 1st Basement Fire Alarm Layout Submittal (Block 1,2,3) | 14d | 2014-06-04 | 2014-06-19 | ENGMEP9090 | 166d | 0d | - Standard 6 day\8hrs With Holiday. | Excavation [14] | MEP | EL |
| ENGMEP9110 |  | Ground Floor Fire Alarm Layout Submittal (Block 1,2,3) | 14d | 2014-06-21 | 2014-07-06 | ENGMEP9100 | 166d | 0d | - Standard 6 day\8hrs With Holiday. | Excavation [14] | MEP | EL |
| ENGMEP9120 |  | Level 1 to Level 7 Block [1] Fire Alarm Layout Submittal | 14d | 2014-07-07 | 2014-07-22 | ENGMEP9110 | 166d | 0d | - Standard 6 day\8hrs With Holiday. | Excavation [14] | MEP | EL |
| ENGMEP9130 |  | Level 1 to Level 9 Block [2] Fire Alarm Layout Submittal | 14d | 2014-07-23 | 2014-08-07 | ENGMEP9120 | 166d | 0d | - Standard 6 day\8hrs With Holiday. | Excavation [14] | MEP | EL |
| ENGMEP9140 |  | Level 1 to Level 11 Block [3] Fire Alarm Layout Submittal | 14d | 2014-08-09 | 2014-08-24 | ENGMEP9130 | 166d | 0d | - Standard 6 day\8hrs With Holiday. | Excavation [14] | MEP | EL |
|  | 2 | **Fire Alarm Drawings Approval** |  | 2014-06-04 | 2014-09-09 |  |  |  |  |  |  |  |
| ENGMEP9190 |  | 2nd Basement Fire Alarm Layout Approval (Block 1,2,3) | 14d | 2014-06-04 | 2014-06-19 | ENGMEP9090 | 178d | 62d | - Standard 6 day\8hrs With Holiday. | Excavation [14] | MEP | EL |
| ENGMEP9200 |  | 1st Basement Fire Alarm Layout Approval (Block 1,2,3) | 14d | 2014-06-21 | 2014-07-06 | ENGMEP9100 | 188d | 86d | - Standard 6 day\8hrs With Holiday. | Excavation [14] | MEP | EL |
| ENGMEP9210 |  | Ground Floor Fire Alarm Layout Approval (Block 1,2,3) | 14d | 2014-07-07 | 2014-07-22 | ENGMEP9110 | 186d | 109d | - Standard 6 day\8hrs With Holiday. | Excavation [14] | MEP | EL |
| ENGMEP9220 |  | Level 1 to Level 7 Block [1] Fire Alarm Layout Approval | 14d | 2014-07-23 | 2014-08-07 | ENGMEP9120 | 262d | 119d | - Standard 6 day\8hrs With Holiday. | Excavation [14] | MEP | EL |
| ENGMEP9230 |  | Level 1 to Level 9 Block [2] Fire Alarm Layout Approval | 14d | 2014-08-09 | 2014-08-24 | ENGMEP9130 | 192d | 148d | - Standard 6 day\8hrs With Holiday. | Excavation [14] | MEP | EL |
| ENGMEP9240 |  | Level 1 to Level 11 Block [3] Fire Alarm Layout Approval | 14d | 2014-08-25 | 2014-09-09 | ENGMEP9140 | 166d | 159d | - Standard 6 day\8hrs With Holiday. | Excavation [14] | MEP | EL |

| ID | WBS | Activity | Duration | Start | Finish | Predecessors | Total float | Free float | Calendar | Resources | Responsibility | MEP Systems | Procurement |
| --- | --- | --- | --- | --- | --- | --- | --- | --- | --- | --- | --- | --- | --- |
|  | 4 | **CCTV Drawings** |  | 2014-05-19 | 2014-09-09 |  |  |  |  |  |  |  |  |
|  | 1 | **CCTV Drawings Submittal** |  | 2014-05-19 | 2014-08-24 |  |  |  |  |  |  |  |  |
| ENGMEP9540 |  | 2nd Basement CCTV Layout Submittal (Block 1,2,3) | 14d | 2014-05-19 | 2014-06-03 | ENG-STR-BL1-APP100, ENG-STR-BL1-APP110, ENGMEP9090 SS | 166d | 0d | - Standard 6 day\8hrs With Holiday. | Excavation [14] | MEP | EL |  |
| ENGMEP9550 |  | 1st Basement CCTV Layout Submittal (Block 1,2,3) | 14d | 2014-06-04 | 2014-06-19 | ENGMEP9540 | 166d | 0d | - Standard 6 day\8hrs With Holiday. | Excavation [14] | MEP | EL |  |
| ENGMEP9560 |  | Ground Floor CCTV Layout Submittal (Block 1,2,3) | 14d | 2014-06-21 | 2014-07-06 | ENGMEP9550 | 166d | 0d | - Standard 6 day\8hrs With Holiday. | Excavation [14] | MEP | EL |  |
| ENGMEP9570 |  | Level 1 to Level 7 Block [1] CCTV Layout Submittal | 14d | 2014-07-07 | 2014-07-22 | ENGMEP9560 | 166d | 0d | - Standard 6 day\8hrs With Holiday. | Excavation [14] | MEP | EL |  |
| ENGMEP9580 |  | Level 1 to Level 9 Block [2] CCTV Layout Submittal | 14d | 2014-07-23 | 2014-08-07 | ENGMEP9570 | 166d | 0d | - Standard 6 day\8hrs With Holiday. | Excavation [14] | MEP | EL |  |
| ENGMEP9590 |  | Level 1 to Level 11 Block [3] CCTV Layout Submittal | 14d | 2014-08-09 | 2014-08-24 | ENGMEP9580 | 166d | 0d | - Standard 6 day\8hrs With Holiday. | Excavation [14] | MEP | EL |  |
|  | 2 | **CCTV Drawings Approval** |  | 2014-06-04 | 2014-09-09 |  |  |  |  |  |  |  |  |
| ENGMEP9610 |  | 2nd Basement CCTV Layout Approval (Block 1,2,3) | 14d | 2014-06-04 | 2014-06-19 | ENGMEP9540 | 178d | 62d | - Standard 6 day\8hrs With Holiday. | Excavation [14] | MEP | EL |  |
| ENGMEP9620 |  | 1st Basement CCTV Layout Approval (Block 1,2,3) | 14d | 2014-06-21 | 2014-07-06 | ENGMEP9550 | 188d | 86d | - Standard 6 day\8hrs With Holiday. | Excavation [14] | MEP | EL |  |
| ENGMEP9630 |  | Ground Floor CCTV Layout Approval (Block 1,2,3) | 14d | 2014-07-07 | 2014-07-22 | ENGMEP9560 | 186d | 109d | - Standard 6 day\8hrs With Holiday. | Excavation [14] | MEP | EL |  |
| ENGMEP9640 |  | Level 1 to Level 7 Block [1] CCTV Layout Approval | 14d | 2014-07-23 | 2014-08-07 | ENGMEP9570 | 262d | 119d | - Standard 6 day\8hrs With Holiday. | Excavation [14] | MEP | EL |  |
| ENGMEP9650 |  | Level 1 to Level 9 Block [2] CCTV Layout Approval | 14d | 2014-08-09 | 2014-08-24 | ENGMEP9580 | 192d | 148d | - Standard 6 day\8hrs With Holiday. | Excavation [14] | MEP | EL |  |
| ENGMEP9660 |  | Level 1 to Level 11 Block [3] CCTV Layout Approval | 14d | 2014-08-25 | 2014-09-09 | ENGMEP9590 | 166d | 159d | - Standard 6 day\8hrs With Holiday. | Excavation [14] | MEP | EL |  |
|  | 3 | **Procurement** |  | 2014-02-01 | 2015-08-19 |  |  |  |  |  |  |  |  |
|  | 12 | **Architectural Packages** |  | 2014-03-08 | 2015-03-07 |  |  |  |  |  |  |  |  |
|  | 12 | **Natural Stone External Facade** |  | 2014-05-18 | 2015-01-31 |  |  |  |  |  |  |  |  |
| A1560 |  | Preparation & Submission | 40d | 2014-05-18 | 2014-07-06 | GEN1000 FS+90d | 288d | 0d |  | Excavation [40] |  |  | Arch |
| A1570 |  | Review & Approval | 14d | 2014-07-07 | 2014-08-03 | A1560 | 288d | 0d |  | Excavation [14] |  |  | Arch |
| A1580 |  | Issue Purchase Order | 12d | 2014-08-04 | 2014-08-17 | A1570 | 288d | 0d |  | Excavation [12] |  |  | Arch |
| A1590 |  | Manufacture & Shipping | 120d | 2014-08-18 | 2015-01-14 | A1580 | 288d | 0d |  | Excavation [120] |  |  | Arch |
| A1600 |  | Clearance & Delivery | 14d | 2015-01-15 | 2015-01-31 | A1590 | 288d | 53d |  | Excavation [14] |  |  | Arch |
|  | 2 | **Natural Stone** |  | 2014-05-29 | 2014-11-12 |  |  |  |  |  |  |  |  |
| A1060 |  | Preparation & Submission | 40d | 2014-05-29 | 2014-07-26 | GEN1000 FS+100d | 143.5d | 0d |  | Excavation [40] |  |  | Arch |
| A1070 |  | Review & Approval | 14d | 2014-07-27 | 2014-08-14 | A1060 | 143.5d | 0d |  | Excavation [14] |  |  | Arch |
| A1080 |  | Issue Purchase Order | 10d | 2014-08-16 | 2014-08-26 | A1070 | 143.5d | 0d |  | Excavation [10] |  |  | Arch |
| A1090 |  | Manufacture & Shipping | 60d | 2014-08-27 | 2014-10-25 | A1080 | 178.5d | 0d | 3- Glodal 7 day\8 hrs No Hoilday. | Excavation [60] |  |  | Arch |
| A1100 |  | Clearance & Delivery | 14d | 2014-10-26 | 2014-11-12 | A1090 | 149.5d | 18d |  | Excavation [14] |  |  | Arch |

| ID | WBS | Activity | Duration | Start | Finish | Predecessors | Total float | Free float | Resources | Procurement |
| --- | --- | --- | --- | --- | --- | --- | --- | --- | --- | --- |
|  | 1 | **Ceramic** |  | 2014-05-06 | 2014-11-08 |  |  |  |  |  |
| A1010 |  | Preparation & Submission | 40d | 2014-05-06 | 2014-06-22 | GEN1000 FS+80d | 153.5d | 0d | Excavation [40] | Arch |
| A1020 |  | Review & Approval | 14d | 2014-06-23 | 2014-07-14 | A1010 | 153.5d | 0d | Excavation [14] | Arch |
| A1030 |  | Issue Purchase Order | 12d | 2014-07-15 | 2014-08-05 | A1020 | 153.5d | 0d | Excavation [12] | Arch |
| A1040 |  | Manufacture & Shipping | 60d | 2014-08-06 | 2014-10-19 | A1030 | 153.5d | 0d | Excavation [60] | Arch |
| A1050 |  | Clearance & Delivery | 14d | 2014-10-20 | 2014-11-08 | A1040 | 153.5d | 22d | Excavation [14] | Arch |
|  | 3 | **Paint** |  | 2014-04-17 | 2014-09-08 |  |  |  |  |  |
| A1110 |  | Preparation & Submission | 20d | 2014-04-17 | 2014-05-11 | GEN1000 FS+65d | 173.5d | 0d | Excavation [20] | Arch |
| A1120 |  | Review & Approval | 14d | 2014-05-12 | 2014-05-27 | A1110 | 173.5d | 0d | Excavation [14] | Arch |
| A1130 |  | Issue Purchase Order | 12d | 2014-05-28 | 2014-06-10 | A1120 | 173.5d | 0d | Excavation [12] | Arch |
| A1140 |  | Manufacture & Shipping | 50d | 2014-06-11 | 2014-08-23 | A1130 | 173.5d | 0d | Excavation [50] | Arch |
| A1150 |  | Clearance & Delivery | 14d | 2014-08-24 | 2014-09-08 | A1140 | 173.5d | 42d | Excavation [14] | Arch |
|  | 4 | **Metal Doors** |  | 2014-06-29 | 2015-01-13 |  |  |  |  |  |
| A1160 |  | Preparation & Submission | 20d | 2014-06-29 | 2014-08-04 | GEN1000 FS+125d | 151.5d | 0d | Excavation [20] | Arch |
| A1170 |  | Review & Approval | 14d | 2014-08-05 | 2014-08-20 | A1160 | 151.5d | 0d | Excavation [14] | Arch |
| A1180 |  | Issue Purchase Order | 12d | 2014-08-21 | 2014-09-03 | A1170 | 151.5d | 0d | Excavation [12] | Arch |
| A1190 |  | Manufacture & Shipping | 90d | 2014-09-04 | 2014-12-25 | A1180 | 151.5d | 0d | Excavation [90] | Arch |
| A1200 |  | Clearance & Delivery | 14d | 2014-12-27 | 2015-01-13 | A1190 | 151.5d | 25d | Excavation [14] | Arch |
|  | 5 | **Roller Shutters** |  | 2014-05-24 | 2015-01-05 |  |  |  |  |  |
| A1210 |  | Preparation & Submission | 60d | 2014-05-24 | 2014-08-16 | GEN1000 FS+95d | 158.5d | 0d | Excavation [60] | Arch |
| A1220 |  | Review & Approval | 14d | 2014-08-17 | 2014-09-01 | A1210 | 158.5d | 0d | Excavation [14] | Arch |
| A1230 |  | Issue Purchase Order | 12d | 2014-09-02 | 2014-09-15 | A1220 | 158.5d | 0d | Excavation [12] | Arch |
| A1240 |  | Manufacture & Shipping | 70d | 2014-09-16 | 2014-12-14 | A1230 | 158.5d | 0d | Excavation [70] | Arch |
| A1250 |  | Clearance & Delivery | 17d | 2014-12-15 | 2015-01-05 | A1240 | 158.5d | 32d | Excavation [17] | Arch |

| ID | WBS | Activity | Duration | Start | Finish | Predecessors | Total float | Free float | Calendar | Resources | Procurement |
| --- | --- | --- | --- | --- | --- | --- | --- | --- | --- | --- | --- |
|  | 6 | **Roof & Wet areas Waterproofing** |  | 2014-03-08 | 2014-06-16 |  |  |  |  |  |  |
| A1260 |  | Preparation & Submission | 10d | 2014-03-08 | 2014-03-18 | GEN1000 FS+30d | 252.5d | 0d |  | Excavation [10] | Arch |
| A1270 |  | Review & Approval | 14d | 2014-03-19 | 2014-04-03 | A1260 | 252.5d | 0d |  | Excavation [14] | Arch |
| A1280 |  | Issue Purchase Order | 12d | 2014-04-05 | 2014-04-17 | A1270 | 252.5d | 0d |  | Excavation [12] | Arch |
| A1290 |  | Manufacture & Shipping | 40d | 2014-04-19 | 2014-06-04 | A1280 | 252.5d | 0d |  | Excavation [40] | Arch |
| A1300 |  | Clearance & Delivery | 10d | 2014-06-05 | 2014-06-16 | A1290 | 252.5d | 121d |  | Excavation [10] | Arch |
|  | 7 | **Aluminum Glazing & Curtain Wall** |  | 2014-06-23 | 2015-03-07 |  |  |  |  |  |  |
| A1310 |  | Preparation & Submission | 40d | 2014-06-23 | 2014-08-21 | GEN1000 FS+120d | 228d | 0d |  | Excavation [40] | Arch |
| A1320 |  | Review & Approval | 14d | 2014-08-23 | 2014-09-07 | A1310 | 228d | 0d |  | Excavation [14] | Arch |
| A1330 |  | Issue Purchase Order | 12d | 2014-09-08 | 2014-09-21 | A1320 | 228d | 0d |  | Excavation [12] | Arch |
| A1340 |  | Manufacture & Shipping | 150d | 2014-09-22 | 2015-02-18 | A1330 | 273d | 0d | 3- Glodal 7 day\8 hrs No Hoilday. | Excavation [150] | Arch |
| A1350 |  | Clearance & Delivery | 14d | 2015-02-19 | 2015-03-07 | A1340 | 258d | 23d |  | Excavation [14] | Arch |
|  | 8 | **Metal Works** |  | 2014-04-23 | 2014-11-08 |  |  |  |  |  |  |
| A1360 |  | Preparation & Submission | 40d | 2014-04-23 | 2014-06-09 | GEN1000 FS+70d | 191.5d | 0d |  | Excavation [40] | Arch |
| A1370 |  | Review & Approval | 14d | 2014-06-10 | 2014-06-26 | A1360 | 191.5d | 0d |  | Excavation [14] | Arch |
| A1380 |  | Issue Purchase Order | 12d | 2014-06-28 | 2014-07-18 | A1370 | 191.5d | 0d |  | Excavation [12] | Arch |
| A1390 |  | Manufacture & Shipping | 70d | 2014-07-19 | 2014-10-19 | A1380 | 191.5d | 0d |  | Excavation [70] | Arch |
| A1400 |  | Clearance & Delivery | 14d | 2014-10-20 | 2014-11-08 | A1390 | 191.5d | 65d |  | Excavation [14] | Arch |
|  | 9 | **Wooden Doors & Joinery** |  | 2014-04-29 | 2014-11-13 |  |  |  |  |  |  |
| A1410 |  | Preparation & Submission | 20d | 2014-04-29 | 2014-05-22 | GEN1000 FS+75d | 201.5d | 0d |  | Excavation [20] | Arch |
| A1420 |  | Review & Approval | 14d | 2014-05-24 | 2014-06-08 | A1410 | 201.5d | 0d |  | Excavation [14] | Arch |
| A1430 |  | Issue Purchase Order | 12d | 2014-06-09 | 2014-06-23 | A1420 | 201.5d | 0d |  | Excavation [12] | Arch |
| A1440 |  | Manufacture & Shipping | 90d | 2014-06-24 | 2014-10-26 | A1430 | 201.5d | 0d |  | Excavation [90] | Arch |
| A1450 |  | Clearance & Delivery | 14d | 2014-10-27 | 2014-11-13 | A1440 | 201.5d | 75d |  | Excavation [14] | Arch |

| ID | WBS | Activity | Duration | Start | Finish | Predecessors | Total float | Free float | Constraint | Calendar | Resources | Procurement | Responsibility |
| --- | --- | --- | --- | --- | --- | --- | --- | --- | --- | --- | --- | --- | --- |
|  | 10 | **Ironmongery** |  | 2014-05-12 | 2014-11-13 |  |  |  |  |  |  |  |  |
| A1460 |  | Preparation & Submission | 40d | 2014-05-12 | 2014-06-28 | GEN1000 FS+85d | 201.5d | 0d |  |  | Excavation [40] | Arch |  |
| A1470 |  | Review & Approval | 14d | 2014-06-29 | 2014-07-24 | A1460 | 201.5d | 0d |  |  | Excavation [14] | Arch |  |
| A1480 |  | Issue Purchase Order | 12d | 2014-07-25 | 2014-08-11 | A1470 | 201.5d | 0d |  |  | Excavation [12] | Arch |  |
| A1490 |  | Manufacture & Shipping | 60d | 2014-08-12 | 2014-10-26 | A1480 | 201.5d | 0d |  |  | Excavation [60] | Arch |  |
| A1500 |  | Clearance & Delivery | 14d | 2014-10-27 | 2014-11-13 | A1490 | 201.5d | 75d |  |  | Excavation [14] | Arch |  |
|  | 11 | **False Ceiling** |  | 2014-05-06 | 2014-11-15 |  |  |  |  |  |  |  |  |
| A1510 |  | Preparation & Submission | 6d | 2014-05-06 | 2014-05-12 | GEN1000 FS+80d | 111d | 0d |  |  | Excavation [6] | Arch |  |
| A1520 |  | Review & Approval | 14d | 2014-05-13 | 2014-05-28 | A1510 | 111d | 0d |  |  | Excavation [14] | Arch |  |
| A1530 |  | Issue Purchase Order | 12d | 2014-05-29 | 2014-06-11 | A1520 | 170.5d | 0d |  |  | Excavation [12] | Arch |  |
| A1540 |  | Manufacture & Shipping | 100d | 2014-06-12 | 2014-10-27 | A1530 | 170.5d | 0d |  |  | Excavation [100] | Arch |  |
| A1550 |  | Clearance & Delivery | 14d | 2014-10-28 | 2014-11-15 | A1540 | 170.5d | 44d |  |  | Excavation [14] | Arch |  |
|  | 5 | **MEP Procurment** |  | 2014-02-01 | 2015-08-19 |  |  |  |  |  |  |  |  |
|  | 1 | **Mechanical** |  | 2014-02-01 | 2015-07-01 |  |  |  |  |  |  |  |  |
|  | 7 | **All Offices Blocks** |  | 2014-02-01 | 2015-07-01 |  |  |  |  |  |  |  |  |
|  | 4 | **DRAINAGE** |  | 2014-04-12 | 2015-03-15 |  |  |  |  |  |  |  |  |
|  | 4 | **Supports & Clamps** |  | 2014-04-12 | 2014-07-27 |  |  |  |  |  |  |  |  |
| OFF-PRO-MEP-DR1000 |  | Issue Purchase Order of DR Pipe Supports & Clamps | 12d | 2014-04-12 | 2014-04-24 | GEN1000 FS+60d | 147d | 0d |  |  | Excavation [12] |  | MEP |
| OFF-PRO-MEP-DR1010 |  | Manufacturing & Shipping of DR Pipe Supports & Clamps | 70d | 2014-04-25 | 2014-07-03 | OFF-PRO-MEP-DR1000 | 197d | 0.25d |  | 3- Glodal 7 day\8 hrs No Hoilday. | Excavation [70] |  | MEP |
| OFF-PRO-MEP-DR1020 |  | Clearance & Delivery to Site of DR Pipe Supports & Clamps | 12d | 2014-07-04 | 2014-07-27 | OFF-PRO-MEP-DR1010 | 148.5d | 21.5d |  |  | Excavation [12] |  | MEP |
|  | 1 | **Draiange Pipes & Fitings** |  | 2014-06-15 | 2014-09-14 |  |  |  |  |  |  |  |  |
| OFF-PRO-MEP-DR1030 |  | Issue Purchase Order of Drainage Pipes & Fittings | 6d | 2014-06-15 | 2014-06-22 | GEN1000 | 103d | 0d | as late as possible |  | Excavation [6] |  | MEP |
| OFF-PRO-MEP-DR1040 |  | Manufacturing & Shipping of Drainage Pipes & Fittings | 70d | 2014-06-23 | 2014-08-31 | OFF-PRO-MEP-DR1030 | 142d | 0d | as late as possible | 3- Glodal 7 day\8 hrs No Hoilday. | Excavation [70] |  | MEP |
| OFF-PRO-MEP-DR1050 |  | Clearance & Delivery to Site of Drainage Pipes & Fittings | 12d | 2014-09-01 | 2014-09-14 | OFF-PRO-MEP-DR1040 | 113d | 0d | as late as possible |  | Excavation [12] |  | MEP |

| ID | WBS | Activity | Duration | Start | Finish | Predecessors | Total float | Free float | Constraint | Calendar | Resources | Responsibility |
| --- | --- | --- | --- | --- | --- | --- | --- | --- | --- | --- | --- | --- |
|  | 2 | **Floor Drains & Outlets (Covers)** |  | 2014-06-23 | 2014-10-23 |  |  |  |  |  |  |  |
| OFF-PRO-MEP-DR1060 |  | Issue Purchase Order of Floor Drains & Outlets | 12d | 2014-06-23 | 2014-07-10 | GEN1000 FS+120d | 224d | 0d |  |  | Excavation [12] | MEP |
| OFF-PRO-MEP-DR1070 |  | Manufacturing & Shipping of Floor Drains & Outlets | 90d | 2014-07-10 | 2014-10-08 | OFF-PRO-MEP-DR1060 | 282.25d | 0.5d |  | 3- Glodal 7 day\8 hrs No Hoilday. | Excavation [90] | MEP |
| OFF-PRO-MEP-DR1080 |  | Clearance & Delivery to Site of Floor Drains & Outlets | 12d | 2014-10-09 | 2014-10-23 | OFF-PRO-MEP-DR1070 | 242.5d | 0d |  |  | Excavation [12] | MEP |
|  | 6 | **Sump Pumps** |  | 2014-07-27 | 2015-03-15 |  |  |  |  |  |  |  |
| OFF-PRO-MEP-DR1090 |  | Preparation & Submission of Sweage Lifting Pumps | 60d | 2014-07-27 | 2014-10-12 | GEN1000 FS+140d | 262d | 0d |  |  | Excavation [60] | MEP |
| OFF-PRO-MEP-DR1100 |  | Review & Approval of Sweage Lifting Pumps | 12d | 2014-10-13 | 2014-10-27 | OFF-PRO-MEP-DR1090 | 262d | 0d |  |  | Excavation [12] | MEP |
| OFF-PRO-MEP-DR1110 |  | Issue Purchase Order of Sweage Lifting Pumps | 12d | 2014-10-28 | 2014-11-12 | OFF-PRO-MEP-DR1100 | 262d | 0d |  |  | Excavation [12] | MEP |
| OFF-PRO-MEP-DR1120 |  | Manufacturing & Shipping of Sweage Lifting Pumps | 90d | 2014-11-13 | 2015-02-10 | OFF-PRO-MEP-DR1110 | 293d | 0d |  | 3- Glodal 7 day\8 hrs No Hoilday. | Excavation [90] | MEP |
| OFF-PRO-MEP-DR1130 |  | Clearance & Delivery to Site of Sweage Lifting Pumps | 28d | 2015-02-11 | 2015-03-15 | OFF-PRO-MEP-DR1120 | 277d | 0d |  |  | Excavation [28] | MEP |
|  | 3 | **PLUMBING** |  | 2014-06-11 | 2015-06-08 |  |  |  |  |  |  |  |
|  | 1 | **PPR Pipes & Fitings** |  | 2014-08-11 | 2014-11-20 |  |  |  |  |  |  |  |
| OFF-PRO-MEP-WS1000 |  | Issue Purchase Order of PPR Pipes & Fittings | 12d | 2014-08-11 | 2014-08-24 | GEN1000 FS+150d | 73d | 0d |  |  | Excavation [12] | MEP |
| OFF-PRO-MEP-WS1010 |  | Manufacturing & Shipping of PPR Pipes & Fittings | 75d | 2014-08-25 | 2014-11-07 | OFF-PRO-MEP-WS1000 | 93d | 0d |  | 3- Glodal 7 day\8 hrs No Hoilday. | Excavation [75] | MEP |
| OFF-PRO-MEP-WS1020 |  | Clearance & Delivery to Site of PPR Pipes & Fittings | 12d | 2014-11-08 | 2014-11-20 | OFF-PRO-MEP-WS1010 | 78d | 0d |  |  | Excavation [12] | MEP |
|  | 2 | **PEX Pipes & Fittings** |  | 2014-06-11 | 2014-09-22 |  |  |  |  |  |  |  |
| OFF-PRO-MEP-WS1030 |  | Issue Purchase Order of PEX Pipes & Fittings | 12d | 2014-06-11 | 2014-06-25 | GEN1000 FS+45d | 96d | 0d | as late as possible |  | Excavation [12] | MEP |
| OFF-PRO-MEP-WS1040 |  | Manufacturing & Shipping of PEX Pipes & Fittings | 75d | 2014-06-26 | 2014-09-08 | OFF-PRO-MEP-WS1030 | 134d | 0d | as late as possible | 3- Glodal 7 day\8 hrs No Hoilday. | Excavation [75] | MEP |
| OFF-PRO-MEP-WS1050 |  | Clearance & Delivery to Site of PEX Pipes & Fittings | 12d | 2014-09-09 | 2014-09-22 | OFF-PRO-MEP-WS1040 | 106d | 0d | as late as possible |  | Excavation [12] | MEP |
|  | 3 | **Water Supply Valves & Accessories** |  | 2014-06-23 | 2014-10-02 |  |  |  |  |  |  |  |
| OFF-PRO-MEP-WS1090 |  | Issue Purchase Order of WS Valves & Acc. | 12d | 2014-06-23 | 2014-07-10 | GEN1000 FS+120d | 107d | 0d |  |  | Excavation [12] | MEP |
| OFF-PRO-MEP-WS1100 |  | Manufacturing & Shipping of WS Valves & Acc. | 70d | 2014-07-10 | 2014-09-18 | OFF-PRO-MEP-WS1090 | 143.25d | 0d |  | 3- Glodal 7 day\8 hrs No Hoilday. | Excavation [70] | MEP |
| OFF-PRO-MEP-WS1110 |  | Clearance & Delivery to Site of WS Valves & Acc. | 12d | 2014-09-18 | 2014-10-02 | OFF-PRO-MEP-WS1100 | 113.25d | 35.25d |  |  | Excavation [12] | MEP |
|  | 11 | **Sanitary Fixtures** |  | 2014-09-15 | 2015-02-09 |  |  |  |  |  |  |  |
| OFF-PRO-MEP-WS1120 |  | Issue Purchase Order of Sanitary FIxtures | 12d | 2014-09-15 | 2014-09-28 | GEN1000 FS+180d | 134.5d | 0d |  |  | Excavation [12] | MEP |
| OFF-PRO-MEP-WS1130 |  | Manufacturing & Shipping of Sanitary FIxtures | 120d | 2014-09-29 | 2015-01-26 | OFF-PRO-MEP-WS1120 | 167.5d | 0d |  | 3- Glodal 7 day\8 hrs No Hoilday. | Excavation [120] | MEP |
| OFF-PRO-MEP-WS1140 |  | Clearance & Delivery to Site of Sanitary FIxtures | 12d | 2015-01-27 | 2015-02-09 | OFF-PRO-MEP-WS1130 | 149.5d | 17d |  |  | Excavation [12] | MEP |

| ID | WBS | Activity | Duration | Start | Finish | Predecessors | Total float | Free float | Calendar | Resources | Responsibility |
| --- | --- | --- | --- | --- | --- | --- | --- | --- | --- | --- | --- |
|  | 14 | **Demostic Water Booster Pump** |  | 2014-06-23 | 2015-06-08 |  |  |  |  |  |  |
| OFF-PRO-MEP-WS1150 |  | Preparation & Submission of Demostic Water Booster Pump | 60d | 2014-06-23 | 2014-09-14 | GEN1000 FS+120d | 89d | 0d |  | Excavation [60] | MEP |
| OFF-PRO-MEP-WS1160 |  | Review & Approval of Demostic Water Booster Pump | 12d | 2014-09-15 | 2014-09-28 | OFF-PRO-MEP-WS1150 | 185d | 0d |  | Excavation [12] | MEP |
| OFF-PRO-MEP-WS1170 |  | Issue Purchase Order of Demostic Water Booster Pump | 90d | 2014-11-11 | 2015-02-25 | OFF-PRO-MEP-WS1160 FS+30d | 185d | 0d |  | Excavation [90] | MEP |
| OFF-PRO-MEP-WS1180 |  | Manufacturing & Shipping of Demostic Water Booster Pump | 72d | 2015-02-26 | 2015-05-08 | OFF-PRO-MEP-WS1170 | 199d | 0d | 3- Glodal 7 day\8 hrs No Hoilday. | Excavation [72] | MEP |
| OFF-PRO-MEP-WS1190 |  | Clearance & Delivery to Site of Demostic Water Booster Pump | 28d | 2015-05-09 | 2015-06-08 | OFF-PRO-MEP-WS1180 | 196d | 0d |  | Excavation [28] | MEP |
|  | 2 | **Fire Fighting System** |  | 2014-02-01 | 2015-01-12 |  |  |  |  |  |  |
|  | 6 | **Fire Pumps / Sprinkler System** |  | 2014-02-01 | 2015-01-12 |  |  |  |  |  |  |
| OFF-PRO-MEP-FF1000 |  | Preparation & Submission of Fire Pumps / Sprinkler System | 45d | 2014-02-01 | 2014-03-24 | GEN1030 | 305d | 0d |  | Excavation [45] | MEP |
| OFF-PRO-MEP-FF1010 |  | Review & Approval of Fire Pumps / Sprinkler System | 12d | 2014-03-25 | 2014-04-07 | OFF-PRO-MEP-FF1000 | 305d | 0d |  | Excavation [12] | MEP |
| OFF-PRO-MEP-FF1020 |  | Issue Purchase Order of Fire Pumps / Sprinkler System | 12d | 2014-09-11 | 2014-09-24 | OFF-PRO-MEP-FF1010 FS+120d | 305d | 0d |  | Excavation [12] | MEP |
| OFF-PRO-MEP-FF1030 |  | Manufacturing & Shipping of Fire Pumps / Sprinkler System | 75d | 2014-09-25 | 2014-12-08 | OFF-PRO-MEP-FF1020 | 350d | 0d | 3- Glodal 7 day\8 hrs No Hoilday. | Excavation [75] | MEP |
| OFF-PRO-MEP-FF1040 |  | Clearance & Delivery to Site of Fire Pumps / Sprinkler System | 28d | 2014-12-09 | 2015-01-12 | OFF-PRO-MEP-FF1030 | 323d | 0d |  | Excavation [28] | MEP |
|  | 1 | **ERW BS Pipes ,MS and MI Fittings** |  | 2014-08-11 | 2014-12-09 |  |  |  |  |  |  |
| OFF-PRO-MEP-FF1050 |  | Issue Purchase Order of ERW BS Pipes ,MS and MI Fittings | 12d | 2014-08-11 | 2014-08-24 | GEN1000 FS+150d | 115d | 0d |  | Excavation [12] | MEP |
| OFF-PRO-MEP-FF1060 |  | Manufacturing & Shipping of ERW BS Pipes ,MS and MI Fittings | 75d | 2014-08-25 | 2014-11-07 | OFF-PRO-MEP-FF1050 | 144d | 0d | 3- Glodal 7 day\8 hrs No Hoilday. | Excavation [75] | MEP |
| OFF-PRO-MEP-FF1070 |  | Clearance & Delivery to Site of ERW BS Pipes ,MS and MI Fittings | 28d | 2014-11-08 | 2014-12-09 | OFF-PRO-MEP-FF1060 | 122d | 0d |  | Excavation [28] | MEP |
|  | 1 | **HVAC** |  | 2014-06-23 | 2015-07-01 |  |  |  |  |  |  |
|  | 12 | **GI Ducts** |  | 2014-08-11 | 2014-12-06 |  |  |  |  |  |  |
| OFF-PRO-MEP-AC1000 |  | Issue Purchase Order of GI Ducts | 12d | 2014-08-11 | 2014-08-24 | GEN1000 FS+150d | 53d | 0d |  | Excavation [12] | MEP |
| OFF-PRO-MEP-AC1010 |  | Manufacturing & Shipping of GI Ducts | 90d | 2014-08-25 | 2014-11-22 | OFF-PRO-MEP-AC1000 | 69d | 0d | 3- Glodal 7 day\8 hrs No Hoilday. | Excavation [90] | MEP |
| OFF-PRO-MEP-AC1020 |  | Clearance & Delivery to Site of GI Ducts | 12d | 2014-11-23 | 2014-12-06 | OFF-PRO-MEP-AC1010 | 57d | 0d |  | Excavation [12] | MEP |
|  | 13 | **Duct Insulation** |  | 2014-08-11 | 2014-11-10 |  |  |  |  |  |  |
| OFF-PRO-MEP-AC1030 |  | Issue Purchase Order of Duct Insulation | 12d | 2014-08-11 | 2014-08-24 | GEN1000 FS+150d | 118d | 0d |  | Excavation [12] | MEP |
| OFF-PRO-MEP-AC1040 |  | Manufacturing & Shipping of Duct Insulation | 60d | 2014-08-25 | 2014-10-23 | OFF-PRO-MEP-AC1030 | 148d | 2d | 3- Glodal 7 day\8 hrs No Hoilday. | Excavation [60] | MEP |
| OFF-PRO-MEP-AC1050 |  | Clearance & Delivery to Site of Duct Insulation | 12d | 2014-10-26 | 2014-11-10 | OFF-PRO-MEP-AC1040 | 121d | 64d |  | Excavation [12] | MEP |

| ID | WBS | Activity | Duration | Start | Finish | Predecessors | Total float | Free float | Calendar | Resources | Responsibility |
| --- | --- | --- | --- | --- | --- | --- | --- | --- | --- | --- | --- |
|  | 18 | **Flexible Ducts** |  | 2014-09-15 | 2014-11-17 |  |  |  |  |  |  |
| OFF-PRO-MEP-AC1060 |  | Issue Purchase Order of Flexible Ducts | 12d | 2014-09-15 | 2014-09-28 | GEN1000 FS+180d | 153d | 0d |  | Excavation [12] | MEP |
| OFF-PRO-MEP-AC1070 |  | Manufacturing & Shipping of Flexible Ducts | 36d | 2014-09-29 | 2014-11-03 | OFF-PRO-MEP-AC1060 | 189d | 0d | 3- Glodal 7 day\8 hrs No Hoilday. | Excavation [36] | MEP |
| OFF-PRO-MEP-AC1080 |  | Clearance & Delivery to Site of Flexible Ducts | 12d | 2014-11-04 | 2014-11-17 | OFF-PRO-MEP-AC1070 | 160d | 66d |  | Excavation [12] | MEP |
|  | 19 | **Flexible Duct Connector** |  | 2014-11-09 | 2015-02-04 |  |  |  |  |  |  |
| OFF-PRO-MEP-AC1090 |  | Issue Purchase Order of Flexible Duct Connector | 12d | 2014-11-09 | 2014-11-22 | GEN1000 FS+220d | 93d | 0d |  | Excavation [12] | MEP |
| OFF-PRO-MEP-AC1100 |  | Manufacturing & Shipping of Flexible Duct Connector | 60d | 2014-11-23 | 2015-01-21 | OFF-PRO-MEP-AC1090 | 110d | 0d | 3- Glodal 7 day\8 hrs No Hoilday. | Excavation [60] | MEP |
| OFF-PRO-MEP-AC1110 |  | Clearance & Delivery to Site of Flexible Duct Connector | 12d | 2015-01-22 | 2015-02-04 | OFF-PRO-MEP-AC1100 | 94d | 0d |  | Excavation [12] | MEP |
|  | 21 | **Grills & Diffusers** |  | 2015-01-20 | 2015-04-29 |  |  |  |  |  |  |
| OFF-PRO-MEP-AC1120 |  | Issue Purchase Order of Grills & Diffusers | 12d | 2015-01-20 | 2015-02-02 | GEN1000 FS+280d | 86.5d | 0d |  | Excavation [12] | MEP |
| OFF-PRO-MEP-AC1130 |  | Manufacturing & Shipping of Grills & Diffusers | 72d | 2015-02-03 | 2015-04-15 | OFF-PRO-MEP-AC1120 | 100.5d | 0d | 3- Glodal 7 day\8 hrs No Hoilday. | Excavation [72] | MEP |
| OFF-PRO-MEP-AC1140 |  | Clearance & Delivery to Site of Grills & Diffusers | 12d | 2015-04-16 | 2015-04-29 | OFF-PRO-MEP-AC1130 | 93.5d | 0d |  | Excavation [12] | MEP |
|  | 6 | **Chilled Water Pipes and Fittings** |  | 2014-06-23 | 2014-11-02 |  |  |  |  |  |  |
| OFF-PRO-MEP-AC1150 |  | Issue Purchase Order of Chilled Water Pipes and Fittings | 12d | 2014-06-23 | 2014-07-10 | GEN1000 FS+120d | 120d | 0d |  | Excavation [12] | MEP |
| OFF-PRO-MEP-AC1160 |  | Manufacturing & Shipping of Chilled Water Pipes and Fittings | 75d | 2014-07-10 | 2014-09-23 | OFF-PRO-MEP-AC1150 | 158.25d | 0d | 3- Glodal 7 day\8 hrs No Hoilday. | Excavation [75] | MEP |
| OFF-PRO-MEP-AC1170 |  | Clearance & Delivery to Site of Chilled Water Pipes and Fittings | 28d | 2014-09-23 | 2014-11-02 | OFF-PRO-MEP-AC1160 | 126.25d | 56.25d |  | Excavation [28] | MEP |
|  | 26 | **Heat Pumps** |  | 2014-06-23 | 2015-04-26 |  |  |  |  |  |  |
| OFF-PRO-MEP-AC1180 |  | Preparation & Submission of Heat Pumps | 30d | 2014-06-23 | 2014-08-10 | GEN1000 FS+120d | 169d | 0d |  | Excavation [30] | MEP |
| OFF-PRO-MEP-AC1190 |  | Review & Approval of Heat Pumps | 12d | 2014-08-11 | 2014-08-24 | OFF-PRO-MEP-AC1180 | 169d | 0d |  | Excavation [12] | MEP |
| OFF-PRO-MEP-AC1200 |  | Issue Purchase Order of Heat Pumps | 12d | 2014-11-11 | 2014-11-24 | OFF-PRO-MEP-AC1190 FS+60d | 169d | 0d |  | Excavation [12] | MEP |
| OFF-PRO-MEP-AC1210 |  | Manufacturing & Shipping of Heat Pumps | 120d | 2014-11-25 | 2015-03-24 | OFF-PRO-MEP-AC1200 | 198d | 0d | 3- Glodal 7 day\8 hrs No Hoilday. | Excavation [120] | MEP |
| OFF-PRO-MEP-AC1220 |  | Clearance & Delivery to Site of Heat Pumps | 28d | 2015-03-25 | 2015-04-26 | OFF-PRO-MEP-AC1210 | 188d | 101d |  | Excavation [28] | MEP |
|  | 1 | **Air Handing Units (AHU's)** |  | 2014-06-23 | 2015-04-26 |  |  |  |  |  |  |
| OFF-PRO-MEP-AC1230 |  | Preparation & Submission of Air Handing Units (AHU's) | 30d | 2014-06-23 | 2014-08-10 | GEN1000 FS+120d | 171d | 0d |  | Excavation [30] | MEP |
| OFF-PRO-MEP-AC1240 |  | Review & Approval of Air Handing Units (AHU's) | 12d | 2014-08-11 | 2014-08-24 | OFF-PRO-MEP-AC1230 | 171d | 0d |  | Excavation [12] | MEP |
| OFF-PRO-MEP-AC1250 |  | Issue Purchase Order of Air Handing Units (AHU's) | 12d | 2014-11-11 | 2014-11-24 | OFF-PRO-MEP-AC1240 FS+60d | 171d | 0d |  | Excavation [12] | MEP |
| OFF-PRO-MEP-AC1260 |  | Manufacturing & Shipping of Air Handing Units (AHU's) | 120d | 2014-11-25 | 2015-03-24 | OFF-PRO-MEP-AC1250 | 200d | 0d | 3- Glodal 7 day\8 hrs No Hoilday. | Excavation [120] | MEP |
| OFF-PRO-MEP-AC1270 |  | Clearance & Delivery to Site of Air Handing Units (AHU's) | 28d | 2015-03-25 | 2015-04-26 | OFF-PRO-MEP-AC1260 | 190d | 101d |  | Excavation [28] | MEP |

| ID | WBS | Activity | Duration | Start | Finish | Predecessors | Total float | Free float | Calendar | Resources | Responsibility |
| --- | --- | --- | --- | --- | --- | --- | --- | --- | --- | --- | --- |
|  | 2 | **Fan Coil Unit's (FCU's)** |  | 2014-06-23 | 2015-02-16 |  |  |  |  |  |  |
| OFF-PRO-MEP-AC1280 |  | Preparation & Submission of Fan Coil Unit's (FCU's) | 60d | 2014-06-23 | 2014-09-14 | GEN1000 FS+120d | 106d | 0d |  | Excavation [60] | MEP |
| OFF-PRO-MEP-AC1290 |  | Review & Approval of Fan Coil Unit's (FCU's) | 12d | 2014-09-15 | 2014-09-28 | OFF-PRO-MEP-AC1280 | 106d | 0d |  | Excavation [12] | MEP |
| OFF-PRO-MEP-AC1300 |  | Issue Purchase Order of Fan Coil Unit's (FCU's) | 12d | 2014-09-29 | 2014-10-16 | OFF-PRO-MEP-AC1290 | 106d | 0d |  | Excavation [12] | MEP |
| OFF-PRO-MEP-AC1310 |  | Manufacturing & Shipping of Fan Coil Unit's (FCU's) | 90d | 2014-10-17 | 2015-01-14 | OFF-PRO-MEP-AC1300 | 130d | 0d | 3- Glodal 7 day\8 hrs No Hoilday. | Excavation [90] | MEP |
| OFF-PRO-MEP-AC1320 |  | Clearance & Delivery to Site of Fan Coil Unit's (FCU's) | 28d | 2015-01-15 | 2015-02-16 | OFF-PRO-MEP-AC1310 | 111d | 0d |  | Excavation [28] | MEP |
|  | 3 | **Chilled Water Pumps** |  | 2014-06-23 | 2015-04-13 |  |  |  |  |  |  |
| OFF-PRO-MEP-AC1330 |  | Preparation & Submission of Chilled Water Pumps | 30d | 2014-06-23 | 2014-08-10 | GEN1000 FS+120d | 244d | 0d |  | Excavation [30] | MEP |
| OFF-PRO-MEP-AC1340 |  | Review & Approval of Chilled Water Pumps | 12d | 2014-08-11 | 2014-08-24 | OFF-PRO-MEP-AC1330 | 244d | 0d |  | Excavation [12] | MEP |
| OFF-PRO-MEP-AC1350 |  | Issue Purchase Order of Chilled Water Pumps | 12d | 2014-12-16 | 2014-12-29 | OFF-PRO-MEP-AC1340 FS+90d | 244d | 0d |  | Excavation [12] | MEP |
| OFF-PRO-MEP-AC1360 |  | Manufacturing & Shipping of Chilled Water Pumps | 72d | 2014-12-30 | 2015-03-11 | OFF-PRO-MEP-AC1350 | 268d | 0d | 3- Glodal 7 day\8 hrs No Hoilday. | Excavation [72] | MEP |
| OFF-PRO-MEP-AC1370 |  | Clearance & Delivery to Site of Chilled Water Pumps | 28d | 2015-03-12 | 2015-04-13 | OFF-PRO-MEP-AC1360 | 256d | 169d |  | Excavation [28] | MEP |
|  | 4 | **Chemical Treatment / Dosing Pot Unit** |  | 2015-01-20 | 2015-07-01 |  |  |  |  |  |  |
| OFF-PRO-MEP-AC1380 |  | Preparation & Submission of Chemical Treatment / Dosing Pot Unit | 30d | 2015-01-20 | 2015-02-23 | GEN1000 FS+280d | 181d | 0d |  | Excavation [30] | MEP |
| OFF-PRO-MEP-AC1390 |  | Review & Approval of Chemical Treatment / Dosing Pot Unit | 12d | 2015-02-24 | 2015-03-09 | OFF-PRO-MEP-AC1380 | 181d | 0d |  | Excavation [12] | MEP |
| OFF-PRO-MEP-AC1400 |  | Issue Purchase Order of Chemical Treatment / Dosing Pot Unit | 12d | 2015-03-10 | 2015-03-23 | OFF-PRO-MEP-AC1390 | 181d | 0d |  | Excavation [12] | MEP |
| OFF-PRO-MEP-AC1410 |  | Manufacturing & Shipping of Chemical Treatment / Dosing Pot Unit | 72d | 2015-03-24 | 2015-06-03 | OFF-PRO-MEP-AC1400 | 191d | 0d | 3- Glodal 7 day\8 hrs No Hoilday. | Excavation [72] | MEP |
| OFF-PRO-MEP-AC1420 |  | Clearance & Delivery to Site of Chemical Treatment / Dosing Pot Unit | 28d | 2015-06-04 | 2015-07-01 | OFF-PRO-MEP-AC1410 | 191d | 40d |  | Excavation [28] | MEP |
|  | 24 | **Extract Fans** |  | 2014-06-23 | 2014-12-21 |  |  |  |  |  |  |
| OFF-PRO-MEP-AC1430 |  | Preparation & Submission of Extract Fans | 30d | 2014-06-23 | 2014-08-10 | GEN1000 FS+120d | 125d | 0d |  | Excavation [30] | MEP |
| OFF-PRO-MEP-AC1440 |  | Review & Approval of Extract Fans | 12d | 2014-08-11 | 2014-08-24 | OFF-PRO-MEP-AC1430 | 316d | 0d |  | Excavation [12] | MEP |
| OFF-PRO-MEP-AC1450 |  | Issue Purchase Order of Extract Fans | 12d | 2014-08-25 | 2014-09-07 | OFF-PRO-MEP-AC1440 | 316d | 0d |  | Excavation [12] | MEP |
| OFF-PRO-MEP-AC1460 |  | Manufacturing & Shipping of Extract Fans | 72d | 2014-09-08 | 2014-11-18 | OFF-PRO-MEP-AC1450 | 363d | 0d | 3- Glodal 7 day\8 hrs No Hoilday. | Excavation [72] | MEP |
| OFF-PRO-MEP-AC1470 |  | Clearance & Delivery to Site of Extract Fans | 28d | 2014-11-19 | 2014-12-21 | OFF-PRO-MEP-AC1460 | 333d | 0d |  | Excavation [28] | MEP |

| ID | WBS | Activity | Duration | Start | Finish | Predecessors | Total float | Free float | Constraint | Calendar | Resources | Responsibility | MEP Systems |
| --- | --- | --- | --- | --- | --- | --- | --- | --- | --- | --- | --- | --- | --- |
|  | 5 | **Interia Bases and Anti Vibration Springs** |  | 2014-12-14 | 2015-06-01 |  |  |  |  |  |  |  |  |
| OFF-PRO-MEP-AC1480 |  | Preparation & Submission of Interia Bases and Anti Vibration Springs | 30d | 2014-12-14 | 2015-01-19 | GEN1000 FS+250d | 129d | 0d |  |  | Excavation [30] | MEP |  |
| OFF-PRO-MEP-AC1490 |  | Review & Approval of Interia Bases and Anti Vibration Springs | 12d | 2015-01-20 | 2015-02-02 | OFF-PRO-MEP-AC1480 | 129d | 0d |  |  | Excavation [12] | MEP |  |
| OFF-PRO-MEP-AC1500 |  | Issue Purchase Order of Interia Bases and Anti Vibration Springs | 12d | 2015-02-03 | 2015-02-16 | OFF-PRO-MEP-AC1490 | 129d | 0d |  |  | Excavation [12] | MEP |  |
| OFF-PRO-MEP-AC1510 |  | Manufacturing & Shipping of Interia Bases and Anti Vibration Springs | 72d | 2015-02-17 | 2015-04-29 | OFF-PRO-MEP-AC1500 | 144d | 0d |  | 3- Glodal 7 day\8 hrs No Hoilday. | Excavation [72] | MEP |  |
| OFF-PRO-MEP-AC1520 |  | Clearance & Delivery to Site of Interia Bases and Anti Vibration Springs | 28d | 2015-04-30 | 2015-06-01 | OFF-PRO-MEP-AC1510 | 139d | 52d |  |  | Excavation [28] | MEP |  |
|  | 2 | **Electrical** |  | 2014-02-01 | 2015-08-19 |  |  |  |  |  |  |  |  |
|  | 3 | **All Offices Blocks** |  | 2014-02-01 | 2015-08-19 |  |  |  |  |  |  |  |  |
|  | 1 | **Power & Lighting** |  | 2014-02-01 | 2015-08-19 |  |  |  |  |  |  |  |  |
|  | 1 | **PVC Conduits & Fittings** |  | 2014-06-05 | 2014-08-31 |  |  |  |  |  |  |  |  |
| PROCMEPELE1090 |  | Issue Purchase Order of PVC Conduits & Fittings | 12d | 2014-06-05 | 2014-06-18 | GEN1000 FS+50d | 96d | 0d | as late as possible |  | Excavation [12] | MEP | EL |
| PROCMEPELE1270 |  | Manufacturing & Shipping of PVC Conduits & Fittings | 60d | 2014-06-19 | 2014-08-17 | PROCMEPELE1090 | 133d | 0d | as late as possible | 3- Glodal 7 day\8 hrs No Hoilday. | Excavation [60] | MEP | EL |
| PROCMEPELE1990 |  | Clearance & Delivery to Site of PVC Conduits & Fittings | 12d | 2014-08-18 | 2014-08-31 | PROCMEPELE1270 | 107d | 0d | as late as possible |  | Excavation [12] | MEP | EL |
|  | 3 | **PVC Back Boxes** |  | 2014-06-05 | 2014-08-31 |  |  |  |  |  |  |  |  |
| PROCMEPELE1180 |  | Issue Purchase Order of PVC Back Boxes | 12d | 2014-06-05 | 2014-06-18 | GEN1000 FS+30d | 96d | 0d | as late as possible |  | Excavation [12] | MEP | EL |
| PROCMEPELE1360 |  | Manufacturing & Shipping of PVC Back Boxes | 60d | 2014-06-19 | 2014-08-17 | PROCMEPELE1180 | 133d | 0d | as late as possible | 3- Glodal 7 day\8 hrs No Hoilday. | Excavation [60] | MEP | EL |
| PROCMEPELE2080 |  | Clearance & Delivery to Site of PVC Back Boxes | 12d | 2014-08-18 | 2014-08-31 | PROCMEPELE1360 | 107d | 0d | as late as possible |  | Excavation [12] | MEP | EL |
|  | 4 | **Earthing & Lightning Protection System** |  | 2014-02-01 | 2014-03-02 |  |  |  |  |  |  |  |  |
| PROCMEPELE1450 |  | Issue Purchase Order of Earthing & Lightning Protection System | 5d | 2014-02-01 | 2014-02-05 | GEN1000 | 20d | 0d |  |  | Excavation [5] | MEP | EL |
| PROCMEPELE1630 |  | Manufacturing & Shipping of Earthing & Lightning Protection System | 15d | 2014-02-06 | 2014-02-23 | PROCMEPELE1450 | 20d | 0d |  |  | Excavation [15] | MEP | EL |
| PROCMEPELE1810 |  | Clearance & Delivery to Site of Earthing & Lightning Protection System | 6d | 2014-02-24 | 2014-03-02 | PROCMEPELE1630 | 20d |  |  |  | Excavation [6] | MEP | EL |
|  | 5 | **Cable Tray / Trunking & Accessories** |  | 2014-06-23 | 2014-09-24 |  |  |  |  |  |  |  |  |
| PROCMEPELE1540 |  | Issue Purchase Order of Cable Tray / Trunking | 12d | 2014-06-23 | 2014-07-10 | GEN1000 FS+120d | 186d | 0d |  |  | Excavation [12] | MEP | EL |
| PROCMEPELE1900 |  | Manufacturing & Shipping of Cable Tray / Trunking | 45d | 2014-07-11 | 2014-09-10 | PROCMEPELE1540 | 186d | 0d |  |  | Excavation [45] | MEP | EL |
| PROCMEPELE3340 |  | Clearance & Delivery to Site of Cable Tray / Trunking | 12d | 2014-09-11 | 2014-09-24 | PROCMEPELE1900 | 186d | 0d |  |  | Excavation [12] | MEP | EL |

| ID | WBS | Activity | Duration | Start | Finish | Predecessors | Total float | Free float | Resources | Responsibility | MEP Systems |
| --- | --- | --- | --- | --- | --- | --- | --- | --- | --- | --- | --- |
|  | 9 | **Wires for Lightng & Power** |  | 2014-02-01 | 2014-04-10 |  |  |  |  |  |  |
| PROCMEPELE3250 |  | Issue Purchase Order of Wires for Lighting & Power | 12d | 2014-02-01 | 2014-02-13 | GEN1020 | 321.5d | 0d | Excavation [12] | MEP | EL |
| PROCMEPELE4060 |  | Manufacturing & Shipping of Wires for Lighting & Power | 36d | 2014-02-15 | 2014-03-27 | PROCMEPELE3250 | 321.5d | 0d | Excavation [36] | MEP | EL |
| PROCMEPELE5680 |  | Clearance & Delivery to Site of Wires for Lighting & Power | 12d | 2014-03-29 | 2014-04-10 | PROCMEPELE4060 | 321.5d | 120d | Excavation [12] | MEP | EL |
|  | 6 | **Structure Cabling** |  | 2014-04-12 | 2014-08-28 |  |  |  |  |  |  |
| PROCMEPELE2260 |  | Preparation & Submission of Structure Cabling | 30d | 2014-04-12 | 2014-05-17 | GEN1050 FS+60d | 255.5d | 0d | Excavation [30] | MEP | EL |
| PROCMEPELE3430 |  | Review & Approval of Structure Cabling | 12d | 2014-05-18 | 2014-05-31 | PROCMEPELE2260 | 255.5d | 0d | Excavation [12] | MEP | EL |
| PROCMEPELE4150 |  | Issue Purchase Order of Structure Cabling | 12d | 2014-06-01 | 2014-06-14 | PROCMEPELE3430 | 255.5d | 0d | Excavation [12] | MEP | EL |
| PROCMEPELE4960 |  | Manufacturing & Shipping of Structure Cabling | 40d | 2014-06-15 | 2014-08-14 | PROCMEPELE4150 | 255.5d | 0d | Excavation [40] | MEP | EL |
| PROCMEPELE6760 |  | Clearance & Delivery to Site of Structure Cabling | 12d | 2014-08-16 | 2014-08-28 | PROCMEPELE4960 | 255.5d | 108d | Excavation [12] | MEP | EL |
|  | 10 | **BMS System** |  | 2014-06-23 | 2014-12-22 |  |  |  |  |  |  |
| PROCMEPELE5770 |  | Preparation & Submission of BMS System | 30d | 2014-06-23 | 2014-08-10 | GEN1000 FS+120d | 136d | 0d | Excavation [30] | MEP | EL |
| PROCMEPELE7120 |  | Review & Approval of BMS System | 12d | 2014-08-11 | 2014-08-24 | PROCMEPELE5770 | 136d | 0d | Excavation [12] | MEP | EL |
| PROCMEPELE7750 |  | Issue Purchase Order of BMS System | 12d | 2014-08-25 | 2014-09-07 | PROCMEPELE7120 | 136d | 0d | Excavation [12] | MEP | EL |
| PROCMEPELE8110 |  | Manufacturing & Shipping of BMS System | 72d | 2014-09-08 | 2014-12-08 | PROCMEPELE7750 | 136d | 0d | Excavation [72] | MEP | EL |
| PROCMEPELE9100 |  | Clearance & Delivery to Site of BMS System | 12d | 2014-12-09 | 2014-12-22 | PROCMEPELE8110 | 136d | 0d | Excavation [12] | MEP | EL |
|  | 7 | **HV Switchgear** |  | 2014-02-01 | 2014-06-29 |  |  |  |  |  |  |
| PROCMEPELE5860 |  | Preparation & Submission of HV Switchgear | 30d | 2014-02-01 | 2014-03-06 | GEN1020 | 391d | 0d | Excavation [30] | MEP | EL |
| PROCMEPELE7210 |  | Review & Approval of HV Switchgear | 12d | 2014-03-08 | 2014-03-20 | PROCMEPELE5860 | 391d | 0d | Excavation [12] | MEP | EL |
| PROCMEPELE7840 |  | Issue Purchase Order of HV Switchgear | 12d | 2014-03-22 | 2014-04-03 | PROCMEPELE7210 | 391d | 0d | Excavation [12] | MEP | EL |
| PROCMEPELE8200 |  | Manufacturing & Shipping of HV Switchgear | 60d | 2014-04-05 | 2014-06-14 | PROCMEPELE7840 | 391d | 0d | Excavation [60] | MEP | EL |
| PROCMEPELE9010 |  | Clearance & Delivery to Site of HV Switchgear | 12d | 2014-06-15 | 2014-06-29 | PROCMEPELE8200 | 391d | 320d | Excavation [12] | MEP | EL |
|  | 12 | **Isolators** |  | 2014-02-01 | 2014-04-24 |  |  |  |  |  |  |
| PROCMEPELE4780 |  | Issue Purchase Order of Isolators | 12d | 2014-02-01 | 2014-02-13 | GEN1020 | 327d | 0d | Excavation [12] | MEP | EL |
| PROCMEPELE5230 |  | Manufacturing & Shipping of Isolators | 48d | 2014-02-15 | 2014-04-10 | PROCMEPELE4780 | 327d | 0d | Excavation [48] | MEP | EL |
| PROCMEPELE7660 |  | Clearance & Delivery to Site of Isolators | 12d | 2014-04-12 | 2014-04-24 | PROCMEPELE5230 | 327d | 160d | Excavation [12] | MEP | EL |

| ID | WBS | Activity | Duration | Start | Finish | Predecessors | Total float | Free float | Resources | Responsibility | MEP Systems |
| --- | --- | --- | --- | --- | --- | --- | --- | --- | --- | --- | --- |
|  | 11 | **Distribution Board** |  | 2014-02-01 | 2014-07-31 |  |  |  |  |  |  |
| PROCMEPELE5950 |  | Preparation & Submission of Distribution Board | 30d | 2014-02-01 | 2014-03-06 | GEN1020 | 248d | 0d | Excavation [30] | MEP | EL |
| PROCMEPELE7300 |  | Review & Approval of Distribution Board | 12d | 2014-03-08 | 2014-03-20 | PROCMEPELE5950 | 248d | 0d | Excavation [12] | MEP | EL |
| PROCMEPELE7930 |  | Issue Purchase Order of Distribution Board | 12d | 2014-03-22 | 2014-04-03 | PROCMEPELE7300 | 248d | 0d | Excavation [12] | MEP | EL |
| PROCMEPELE8290 |  | Manufacturing & Shipping of Distribution Board | 60d | 2014-04-05 | 2014-06-14 | PROCMEPELE7930 | 248d | 0d | Excavation [60] | MEP | EL |
| PROCMEPELE8920 |  | Clearance & Delivery to Site of Distribution Board | 28d | 2014-06-15 | 2014-07-31 | PROCMEPELE8290 | 248d | 44d | Excavation [28] | MEP | EL |
|  | 19 | **MDB** |  | 2014-02-01 | 2015-03-02 |  |  |  |  |  |  |
| PROCMEPELE6040 |  | Preparation & Submission of MDBs | 24d | 2014-02-01 | 2014-02-27 | GEN1020 | 233d | 0d | Excavation [24] | MEP | EL |
| PROCMEPELE6850 |  | Review & Approval of MDBs | 12d | 2014-03-01 | 2014-03-13 | PROCMEPELE6040 | 233d | 144d | Excavation [12] | MEP | EL |
| PROCMEPELE8470 |  | Issue Purchase Order of MDBs | 12d | 2014-09-15 | 2014-09-28 | PROCMEPELE6850, OFF-PRO-MEP-WS1150, OFF-PRO-MEP-AC1430 FF+6d | 89d | 0d | Excavation [12] | MEP | EL |
| PROCMEPELE8740 |  | Manufacturing & Shipping of MDBs | 96d | 2014-09-29 | 2015-01-28 | PROCMEPELE8470 | 89d | 0d | Excavation [96] | MEP | EL |
| PROCMEPELE9190 |  | Clearance & Delivery to Site of MDBs | 28d | 2015-01-29 | 2015-03-02 | PROCMEPELE8740 | 89d | 0d | Excavation [28] | MEP | EL |
|  | 8 | **SMDB** |  | 2014-02-01 | 2014-07-22 |  |  |  |  |  |  |
| PROCMEPELE9340 |  | Preparation & Submission of SMDB | 30d | 2014-02-01 | 2014-03-06 | GEN1020 | 261d | 0d | Excavation [30] | MEP | EL |
| PROCMEPELE9350 |  | Review & Approval of SMDB | 12d | 2014-03-08 | 2014-03-20 | PROCMEPELE9340 | 261d | 0d | Excavation [12] | MEP | EL |
| PROCMEPELE9360 |  | Issue Purchase Order of SMDB | 12d | 2014-03-22 | 2014-04-03 | PROCMEPELE9350 | 261d | 0d | Excavation [12] | MEP | EL |
| PROCMEPELE9370 |  | Manufacturing & Shipping of SMDB | 72d | 2014-04-05 | 2014-06-29 | PROCMEPELE9360 | 261d | 0d | Excavation [72] | MEP | EL |
| PROCMEPELE9380 |  | Clearance & Delivery to Site of SMDB | 12d | 2014-06-30 | 2014-07-22 | PROCMEPELE9370 | 261d | 42d | Excavation [12] | MEP | EL |
|  | 13 | **MCC** |  | 2014-02-01 | 2014-07-22 |  |  |  |  |  |  |
| PROCMEPELE9390 |  | Preparation & Submission of MCC | 30d | 2014-02-01 | 2014-03-06 | GEN1020 | 416d | 0d | Excavation [30] | MEP | EL |
| PROCMEPELE9400 |  | Review & Approval of MCC | 12d | 2014-03-08 | 2014-03-20 | PROCMEPELE9390 | 416d | 0d | Excavation [12] | MEP | EL |
| PROCMEPELE9410 |  | Issue Purchase Order of MCC | 12d | 2014-03-22 | 2014-04-03 | PROCMEPELE9400 | 416d | 0d | Excavation [12] | MEP | EL |
| PROCMEPELE9420 |  | Manufacturing & Shipping of MCC | 72d | 2014-04-05 | 2014-06-29 | PROCMEPELE9410 | 416d | 0d | Excavation [72] | MEP | EL |
| PROCMEPELE9430 |  | Clearance & Delivery to Site of MCC | 12d | 2014-06-30 | 2014-07-22 | PROCMEPELE9420 | 416d | 334.5d | Excavation [12] | MEP | EL |

| ID | WBS | Activity | Duration | Start | Finish | Predecessors | Total float | Free float | Constraint | Resources | Responsibility | MEP Systems |
| --- | --- | --- | --- | --- | --- | --- | --- | --- | --- | --- | --- | --- |
|  | 16 | **Transformers** |  | 2014-02-01 | 2014-10-14 |  |  |  |  |  |  |  |
| PROCMEPELE6130 |  | Preparation & Submission of Transformers | 30d | 2014-02-01 | 2014-03-06 | GEN1020 | 331d | 0d |  | Excavation [30] | MEP | EL |
| PROCMEPELE7390 |  | Review & Approval of Transformers | 12d | 2014-03-08 | 2014-03-20 | PROCMEPELE6130 | 331d | 0d |  | Excavation [12] | MEP | EL |
| PROCMEPELE8020 |  | Issue Purchase Order of Transformers | 12d | 2014-03-22 | 2014-04-03 | PROCMEPELE7390 | 331d | 0d |  | Excavation [12] | MEP | EL |
| PROCMEPELE8380 |  | Manufacturing & Shipping of Transformers | 120d | 2014-04-05 | 2014-09-07 | PROCMEPELE8020 | 331d | 0d |  | Excavation [120] | MEP | EL |
| PROCMEPELE9280 |  | Clearance & Delivery to Site of Transformers | 28d | 2014-09-08 | 2014-10-14 | PROCMEPELE8380 | 331d | 270.5d |  | Excavation [28] | MEP | EL |
|  | 23 | **Flexible Conduit** |  | 2014-05-06 | 2014-08-26 |  |  |  |  |  |  |  |
| PROCMEPELE4870 |  | Issue Purchase Order of Flexible Conduit | 12d | 2014-05-06 | 2014-05-19 | GEN1000 FS+80d | 214.5d | 0d |  | Excavation [12] | MEP | EL |
| PROCMEPELE5320 |  | Manufacturing & Shipping of Flexible Conduit | 60d | 2014-05-20 | 2014-08-12 | PROCMEPELE4870 | 214.5d | 0d |  | Excavation [60] | MEP | EL |
| PROCMEPELE6940 |  | Clearance & Delivery to Site of Flexible Conduit | 12d | 2014-08-13 | 2014-08-26 | PROCMEPELE5320 | 214.5d | 25d |  | Excavation [12] | MEP | EL |
|  | 14 | **Generator (Including Fuel Tank )** |  | 2015-01-27 | 2015-08-19 |  |  |  |  |  |  |  |
| PROCMEPELE9490 |  | Preparation & Submission of Generator (Including Fuel Tank ) | 30d | 2015-01-27 | 2015-03-03 | GEN1020 | 92d | 0d | as late as possible | Excavation [30] | MEP | EL |
| PROCMEPELE9500 |  | Review & Approval of Generator (Including Fuel Tank ) | 12d | 2015-03-03 | 2015-03-17 | PROCMEPELE9490 | 92d | 0d | as late as possible | Excavation [12] | MEP | EL |
| PROCMEPELE9510 |  | Issue Purchase Order of Generator (Including Fuel Tank ) | 12d | 2015-03-17 | 2015-03-31 | PROCMEPELE9500, GEN1000 FS+250d | 92d | 0d | as late as possible | Excavation [12] | MEP | EL |
| PROCMEPELE9520 |  | Manufacturing & Shipping of Generator (Including Fuel Tank ) | 120d | 2015-03-31 | 2015-08-07 | PROCMEPELE9510 | 92d | 0d | as late as possible | Excavation [120] | MEP | EL |
| PROCMEPELE9530 |  | Clearance & Delivery to Site of Generator (Including Fuel Tank ) | 12d | 2015-08-07 | 2015-08-19 | PROCMEPELE9520 | 92d | 0d | as late as possible | Excavation [12] | MEP | EL |
|  | 2 | **Emergency Lighting** |  | 2014-02-01 | 2014-10-09 |  |  |  |  |  |  |  |
| PROCMEPELE9290 |  | Preparation & Submission of Emergency Lighting | 30d | 2014-02-01 | 2014-03-06 | GEN1030 | 196d | 0d |  | Excavation [30] | MEP | EL |
| PROCMEPELE9300 |  | Review & Approval of Emergency Lighting | 12d | 2014-03-08 | 2014-03-20 | PROCMEPELE9290 | 196d | 0d |  | Excavation [12] | MEP | EL |
| PROCMEPELE9310 |  | Issue Purchase Order of Emergency Lighting | 12d | 2014-06-01 | 2014-06-14 | PROCMEPELE9300 FS+60d | 196d | 0d |  | Excavation [12] | MEP | EL |
| PROCMEPELE9320 |  | Manufacturing & Shipping of Emergency Lighting | 72d | 2014-06-15 | 2014-09-21 | PROCMEPELE9310 | 196d | 0d |  | Excavation [72] | MEP | EL |
| PROCMEPELE9330 |  | Clearance & Delivery to Site of Emergency Lighting | 12d | 2014-09-22 | 2014-10-09 | PROCMEPELE9320 | 196d | 19d |  | Excavation [12] | MEP | EL |
|  | 22 | **Wiring Accessories** |  | 2014-06-23 | 2015-03-25 |  |  |  |  |  |  |  |
| PROCMEPELE3700 |  | Preparation & Submission of Wiring Accessories | 30d | 2014-06-23 | 2014-08-10 | GEN1000 FS+120d | 131.5d | 0d |  | Excavation [30] | MEP | EL |
| PROCMEPELE5410 |  | Review & Approval of Wiring Accessories | 12d | 2014-08-11 | 2014-08-24 | PROCMEPELE3700 | 131.5d | 0d |  | Excavation [12] | MEP | EL |
| PROCMEPELE6220 |  | Issue Purchase Order of Wiring Accessories | 12d | 2014-11-11 | 2014-11-24 | PROCMEPELE5410 FS+60d | 131.5d | 0d |  | Excavation [12] | MEP | EL |
| PROCMEPELE6670 |  | Manufacturing & Shipping of Wiring Accessories | 90d | 2014-11-25 | 2015-03-11 | PROCMEPELE6220 | 131.5d | 0d |  | Excavation [90] | MEP | EL |
| PROCMEPELE8830 |  | Clearance & Delivery to Site of Wiring Accessories | 12d | 2015-03-12 | 2015-03-25 | PROCMEPELE6670 | 131.5d | 0d |  | Excavation [12] | MEP | EL |

| ID | WBS | Activity | Duration | Start | Finish | Predecessors | Total float | Free float | Calendar | Resources | Responsibility | MEP Systems |
| --- | --- | --- | --- | --- | --- | --- | --- | --- | --- | --- | --- | --- |
|  | 21 | **Light Fittings** |  | 2014-06-01 | 2014-11-09 |  |  |  |  |  |  |  |
| PROCMEPELE2800 |  | Preparation & Submission of Light Fittings | 30d | 2014-06-01 | 2014-06-30 | GEN1000 FS+120d | 279.5d | 0.25d | 3- Glodal 7 day\8 hrs No Hoilday. | Excavation [30] | MEP | EL |
| PROCMEPELE4420 |  | Review & Approval of Light Fittings | 12d | 2014-07-01 | 2014-07-24 | PROCMEPELE2800 | 218.5d | 0d |  | Excavation [12] | MEP | EL |
| PROCMEPELE5050 |  | Issue Purchase Order of Light Fittings | 12d | 2014-07-25 | 2014-08-11 | PROCMEPELE4420 | 218.5d | 0d |  | Excavation [12] | MEP | EL |
| PROCMEPELE5500 |  | Manufacturing & Shipping of Light Fittings | 72d | 2014-08-12 | 2014-10-22 | PROCMEPELE5050 | 265.5d | 0d | 3- Glodal 7 day\8 hrs No Hoilday. | Excavation [72] | MEP | EL |
| PROCMEPELE8560 |  | Clearance & Delivery to Site of Light Fittings | 12d | 2014-10-23 | 2014-11-09 | PROCMEPELE5500 | 228.5d | 9d |  | Excavation [12] | MEP | EL |
|  | 2 | **ELV Systems** |  | 2014-02-01 | 2015-08-12 |  |  |  |  |  |  |  |
|  | 20 | **Sound System for Common Area** |  | 2014-06-23 | 2014-12-29 |  |  |  |  |  |  |  |
| PROCMEPELE2350 |  | Preparation & Submission of Sound System for Common Area | 18d | 2014-06-23 | 2014-07-22 | GEN1000 FS+120d | 157.5d | 0d |  | Excavation [18] | MEP | EL |
| PROCMEPELE2890 |  | Review & Approval of Sound System for Common Area | 12d | 2014-07-23 | 2014-08-10 | PROCMEPELE2350 | 157.5d | 0d |  | Excavation [12] | MEP | EL |
| PROCMEPELE3520 |  | Issue Purchase Order of Sound System for Common Area | 12d | 2014-08-11 | 2014-08-24 | PROCMEPELE2890 | 157.5d | 0d |  | Excavation [12] | MEP | EL |
| PROCMEPELE4240 |  | Manufacturing & Shipping of Sound System for Common Area | 90d | 2014-08-25 | 2014-12-15 | PROCMEPELE3520 | 157.5d | 0d |  | Excavation [90] | MEP | EL |
| PROCMEPELE7030 |  | Clearance & Delivery to Site of Sound System for Common Area | 12d | 2014-12-16 | 2014-12-29 | PROCMEPELE4240 | 157.5d | 10d |  | Excavation [12] | MEP | EL |
|  | 21 | **Intrusion Alarm System** |  | 2014-06-23 | 2015-03-23 |  |  |  |  |  |  |  |
| PROCMEPELE2530 |  | Preparation & Submission of Intrusion Alarm System | 24d | 2014-06-23 | 2014-08-03 | GEN1000 FS+120d | 197.5d | 0d |  | Excavation [24] | MEP | EL |
| PROCMEPELE3070 |  | Review & Approval of Intrusion Alarm System | 12d | 2014-08-04 | 2014-08-17 | PROCMEPELE2530 | 197.5d | 64d |  | Excavation [12] | MEP | EL |
| PROCMEPELE3880 |  | Issue Purchase Order of Intrusion Alarm System | 12d | 2014-11-09 | 2014-11-22 | PROCMEPELE3070, GEN1000 FS+220d | 133.5d | 0d |  | Excavation [12] | MEP | EL |
| PROCMEPELE4600 |  | Manufacturing & Shipping of Intrusion Alarm System | 90d | 2014-11-23 | 2015-03-09 | PROCMEPELE3880 | 133.5d | 0d |  | Excavation [90] | MEP | EL |
| PROCMEPELE6400 |  | Clearance & Delivery to Site - Wires of Intrusion Alarm System | 12d | 2014-12-28 | 2015-01-12 | PROCMEPELE4600 SS+30d | 147.5d | 0d |  | Excavation [12] | MEP | EL |
| PROCMEPELE7480 |  | Clearance & Delivery to Site - Devices of Intrusion Alarm System | 12d | 2015-03-10 | 2015-03-23 | PROCMEPELE4600 | 133.5d | 6d |  | Excavation [12] | MEP | EL |
|  | 1 | **CCTV system** |  | 2014-06-23 | 2015-03-09 |  |  |  |  |  |  |  |
| PROCMEPELE2620 |  | Preparation & Submission of CCTV system | 24d | 2014-06-23 | 2014-08-03 | GEN1000 FS+120d | 211.5d | 0d |  | Excavation [24] | MEP | EL |
| PROCMEPELE3160 |  | Review & Approval of CCTV system | 12d | 2014-08-04 | 2014-08-17 | PROCMEPELE2620 | 211.5d | 64d |  | Excavation [12] | MEP | EL |
| PROCMEPELE3970 |  | Issue Purchase Order of CCTV system | 12d | 2014-11-09 | 2014-11-22 | PROCMEPELE3160, GEN1000 FS+220d | 147.5d | 0d |  | Excavation [12] | MEP | EL |
| PROCMEPELE4690 |  | Manufacturing & Shipping of CCTV system | 90d | 2014-11-23 | 2015-03-09 | PROCMEPELE3970 | 147.5d | 0d |  | Excavation [90] | MEP | EL |
| PROCMEPELE6490 |  | Clearance & Delivery to Site of CCTV system | 12d | 2014-12-28 | 2015-01-12 | PROCMEPELE4690 SS+30d | 147.5d | 0d |  | Excavation [12] | MEP | EL |

| ID | WBS | Activity | Duration | Start | Finish | Predecessors | Total float | Free float | Resources | Cost | Responsibility | MEP Systems | Structural | MEP Steps |
| --- | --- | --- | --- | --- | --- | --- | --- | --- | --- | --- | --- | --- | --- | --- |
|  | 3 | **Fire Alarm System** |  | 2014-02-01 | 2014-12-01 |  |  |  |  |  |  |  |  |  |
| PROCMEPELE3790 |  | Preparation & Submission of Fire Alarm System | 24d | 2014-02-01 | 2014-02-27 | GEN1030 | 150d | 0d | Excavation [24] |  | MEP | EL |  |  |
| PROCMEPELE5140 |  | Review & Approval of Fire Alarm System | 12d | 2014-03-01 | 2014-03-13 | PROCMEPELE3790 | 150d | 0d | Excavation [12] |  | MEP | EL |  |  |
| PROCMEPELE5590 |  | Issue Purchase Order of Fire Alarm System | 12d | 2014-06-30 | 2014-07-22 | PROCMEPELE5140 FS+90d | 150d | 0d | Excavation [12] |  | MEP | EL |  |  |
| PROCMEPELE6580 |  | Manufacturing & Shipping of Fire Alarm System | 90d | 2014-07-23 | 2014-11-17 | PROCMEPELE5590 | 150d | 0d | Excavation [90] |  | MEP | EL |  |  |
| PROCMEPELE8650 |  | Clearance & Delivery to Site of Fire Alarm System | 12d | 2014-11-18 | 2014-12-01 | PROCMEPELE6580 | 150d | 0d | Excavation [12] |  | MEP | EL |  |  |
|  | 2 | **Lighting Control System** |  | 2014-11-09 | 2015-05-11 |  |  |  |  |  |  |  |  |  |
| PROCMEPELE1000 |  | Preparation & Submission of Lighting Control System | 30d | 2014-11-09 | 2014-12-13 | GEN1000 FS+220d | 87.5d | 0d | Excavation [30] |  | MEP | EL |  |  |
| PROCMEPELE1720 |  | Review & Approval of Lighting Control System | 12d | 2014-12-14 | 2014-12-27 | PROCMEPELE1000 | 87.5d | 0d | Excavation [12] |  | MEP | EL |  |  |
| PROCMEPELE2170 |  | Issue Purchase Order of Lighting Control System | 12d | 2014-12-28 | 2015-01-12 | PROCMEPELE1720 | 87.5d | 0d | Excavation [12] |  | MEP | EL |  |  |
| PROCMEPELE2710 |  | Manufacturing & Shipping of Lighting Control System | 90d | 2015-01-13 | 2015-04-27 | PROCMEPELE2170 | 87.5d | 0d | Excavation [90] |  | MEP | EL |  |  |
| PROCMEPELE4510 |  | Clearance & Delivery to Site of Lighting Control System | 12d | 2015-04-28 | 2015-05-11 | PROCMEPELE2710 | 87.5d | 0d | Excavation [12] |  | MEP | EL |  |  |
|  | 4 | **Air Craft Warning System** |  | 2014-12-14 | 2015-08-12 |  |  |  |  |  |  |  |  |  |
| PROCMEPELE9440 |  | Preparation & Submission of Air Craft Warning System | 30d | 2014-12-14 | 2015-01-19 | GEN1000 FS+250d | 177d | 0d | Excavation [30] |  | MEP | EL |  |  |
| PROCMEPELE9450 |  | Review & Approval of Air Craft Warning System | 12d | 2015-01-20 | 2015-02-02 | PROCMEPELE9440 | 177d | 0d | Excavation [12] |  | MEP | EL |  |  |
| PROCMEPELE9460 |  | Issue Purchase Order of Air Craft Warning System | 12d | 2015-05-19 | 2015-06-01 | PROCMEPELE9450 FS+90d | 177d | 0d | Excavation [12] |  | MEP | EL |  |  |
| PROCMEPELE9470 |  | Manufacturing & Shipping of Air Craft Warning System | 60d | 2015-06-02 | 2015-07-31 | PROCMEPELE9460 | 177d | 0d | Excavation [60] |  | MEP | EL |  |  |
| PROCMEPELE9480 |  | Clearance & Delivery to Site of Air Craft Warning System | 12d | 2015-08-01 | 2015-08-12 | PROCMEPELE9470 | 177d | 0d | Excavation [12] |  | MEP | EL |  |  |
|  | Const | **Construction** |  | 2014-02-01 | 2016-03-08 |  |  |  |  |  |  |  |  |  |
|  | 3 | **Offices Buildings** |  | 2014-02-01 | 2016-03-01 |  |  |  |  |  |  |  |  |  |
|  | 1 | **Block 1** |  | 2014-02-01 | 2015-12-14 |  |  |  |  |  |  |  |  |  |
|  | 1 | **Basement 2** |  | 2014-02-01 | 2015-07-06 |  |  |  |  |  |  |  |  |  |
|  | 1 | **Structural** |  | 2014-02-01 | 2014-04-01 |  |  |  |  |  |  |  |  |  |
| BL1-ST-B2-1000 |  | Blinding | 5d | 2014-02-01 | 2014-02-05 | GEN1000 | 0d |  | Excavation [5] |  |  |  | STR |  |
| BL1-ST-B2-1010 |  | Waterproofing | 10d | 2014-02-06 | 2014-02-17 | BL1-ST-B2-1000 | 0d |  | MNHRS [1801.2 h]; Cash Flow [7918.9 h]; Waterproofing [1296]; Excavation [10] | 7,918.9 |  |  | STR |  |
| BL1-ST-B2-1020 |  | Formwork | 14d | 2014-02-18 | 2014-03-05 | BL1-ST-B2-1000, BL1-ST-B2-1010 | 0d |  | MNHRS [527.56 h]; Cash Flow; FW [254.3]; Excavation [14] |  |  |  | STR |  |
| BL1-ST-B2-1030 |  | Reinforcement | 22d | 2014-03-06 | 2014-03-31 | BL1-ST-B2-1020, ENG-STR-APP100, ENG-STR-APP110 | 0d |  | MNHRS [3429.97 h]; Cash Flow [229321 h]; Reinforcement [182001]; Excavation [22] | 229,321.26 |  |  | STR |  |
| BL1-ST-B2-1040 |  | MEP Works in Raft | 5d | 2014-03-26 | 2014-03-31 | ENGMEP8700, OFF-ENG-MEP-DR1090, BL1-ST-B2-1030 FF | 0d |  | Cash Flow [13051 h]; Plumber [312 h]; Excavation [5] | 13,051 | MEP | PL & D |  | B.W |
| BL1-ST-B2-1050 |  | Earthing Works | 5d | 2014-03-26 | 2014-03-31 | BL1-ST-B2-1040 SS, ENGMEP8700, ENGMEP8910, PROCMEPELE1810 | 0d |  | Cash Flow [8362.29 h]; Electrician [408 h]; Excavation [5] | 8,362.29 | MEP | EL |  | B.W |
| BL1-ST-B2-1060 |  | Concrete | 1d | 2014-04-01 | 2014-04-01 | BL1-ST-B2-1030, BL1-ST-B2-1040, BL1-ST-B2-1050 | 0d |  | MNHRS [14807.6 h]; Cash Flow [248564 h]; Concrete [1801]; Excavation [1] | 248,564.42 |  |  | STR |  |

| ID | WBS | Activity | Duration | Start | Finish | Predecessors | Total float | Free float | Resources | Cost | Responsibility | MEP Systems | MEP Steps | Fix |
| --- | --- | --- | --- | --- | --- | --- | --- | --- | --- | --- | --- | --- | --- | --- |
|  | 11 | **MEP Work** |  | 2014-09-13 | 2015-07-06 |  |  |  |  |  |  |  |  |  |
|  | 1 | **Mechanical System** |  | 2014-09-23 | 2015-06-26 |  |  |  |  |  |  |  |  |  |
|  | 2 | **HVAC Works** |  | 2014-09-23 | 2015-05-11 |  |  |  |  |  |  |  |  |  |
|  | 1 | **1st Fix** |  | 2014-09-23 | 2014-10-11 |  |  |  |  |  |  |  |  |  |
| BL1-MEP-AC-B2-1000 |  | Supports and Hungers Fixing | 12d | 2014-09-23 | 2014-10-11 | OFF-ENG-MEP-AC1130, OFF-PRO-MEP-DR1020, BL1-FN-B2-1000 | 150.5d | 12d | Cash Flow [118.11 h]; Ductman [192 h]; Excavation [12] | 118.11 | MEP | AC | 1st Fix | 1f |
|  | 3 | **2nd Fix** |  | 2014-12-07 | 2015-01-18 |  |  |  |  |  |  |  |  |  |
| BL1-MEP-AC-B2-2000 |  | Fresh Air Duct and Extract Duct Installation | 21d | 2014-12-07 | 2014-12-30 | BL1-MEP-AC-B2-1000, OFF-PRO-MEP-AC1020, BL1-FN-B2-1010 | 114.5d | 0d | Cash Flow [2008.38 h]; Ductman [1008 h]; Excavation [21] | 2,008.38 | MEP | AC | 2nd Fix | 2f |
| BL1-MEP-AC-B2-2010 |  | Duct Accessories Installation | 14d | 2014-12-31 | 2015-01-18 | BL1-MEP-AC-B2-2000 | 126.5d | 0d | Cash Flow [236.17 h]; Pipe Fitter - CHW [448 h]; Excavation [14] | 236.17 | MEP | AC | 2nd Fix | 2f |
|  | 4 | **Final Fix** |  | 2015-04-30 | 2015-05-11 |  |  |  |  |  |  |  |  |  |
| BL1-MEP-AC-B2-3000 |  | Grills and Diffusers Fixing | 10d | 2015-04-30 | 2015-05-11 | BL1-MEP-AC-B2-2010, OFF-PRO-MEP-AC1140, BL1-FN-B2-1070 | 93.5d | 0d | Cash Flow [416.81 h]; Ductman [320 h]; Excavation [10] | 416.81 | MEP | AC | Final F | ff |
|  | 1 | **Plumbing and Drainage Works** |  | 2014-09-23 | 2015-04-08 |  |  |  |  |  |  |  |  |  |
|  | 1 | **1st Fix** |  | 2014-09-23 | 2014-10-11 |  |  |  |  |  |  |  |  |  |
| BL1-MEP-PL-B2-1000 |  | Low Level Water Supply Pipes Installation | 12d | 2014-09-23 | 2014-10-11 | OFF-ENG-MEP-WS1090, OFF-PRO-MEP-WS1050, BL1-FN-B2-1000 | 128.5d | 12d | Cash Flow [713.22 h]; Plumber [42 h]; Excavation [12] | 713.22 | MEP | PL & D | 1st Fix | 1f |
| BL1-MEP-PL-B2-1010 |  | Low Level Drainage Pipes Installation | 12d | 2014-09-23 | 2014-10-11 | OFF-ENG-MEP-DR1100, OFF-PRO-MEP-DR1050, BL1-FN-B2-1000 | 128.5d | 12d | Cash Flow [82.43 h]; Plumber [12.67 h]; Excavation [12] | 82.43 | MEP | PL & D | 1st Fix | 1f |
| BL1-MEP-PL-B2-1020 |  | Supports installation for High level Pipes | 12d | 2014-09-23 | 2014-10-11 | OFF-ENG-MEP-WS1090, OFF-ENG-MEP-DR1100, OFF-PRO-MEP-DR1020, BL1-FN-B2-1000 | 134.5d | 12d | Cash Flow [819.68 h]; Plumber [16.35 h]; Excavation [12] | 819.68 | MEP | PL & D | 1st Fix | 1f |
|  | 3 | **2nd Fix** |  | 2014-11-05 | 2015-04-08 |  |  |  |  |  |  |  |  |  |
| BL1-MEP-PL-B2-2000 |  | High Level Drainage Pipes Installation | 21d | 2014-11-05 | 2014-11-29 | BL1-MEP-PL-B2-1020, BL1-MEP-PL-B2-1010, BL1-FN-B2-1010 | 149.5d | 9d | Cash Flow [6562.53 h]; Plumber [244.38 h]; Excavation [21] | 6,562.53 | MEP | PL & D | 2nd Fix | 2f |
| BL1-MEP-PL-B2-2030 |  | High Level Water Supply Pipes and Fittings Installation | 21d | 2014-11-22 | 2014-12-15 | BL1-MEP-PL-B2-1020, BL1-MEP-PL-B2-1000, OFF-PRO-MEP-WS1020, OFF-PRO-MEP-WS1110, BL1-FN-B2-1010 | 135.5d | 0d | Cash Flow [1308.6 h]; Plumber [150.02 h]; Excavation [21] | 1,308.6 | MEP | PL & D | 2nd Fix | 2f |
| BL1-MEP-PL-B2-2040 |  | Water Supply Pipes Pressure Test | 6d | 2014-12-16 | 2014-12-22 | BL1-MEP-PL-B2-2030, BL1-MEP-PL-B2-1000 | 147.5d | 15d | Cash Flow [145.74 h]; Plumber [48 h]; Excavation [6] | 145.74 | MEP | PL & D | 2nd Fix | 2f |
| BL1-MEP-PL-B2-2010 |  | Parking Drain Installation | 6d | 2014-12-28 | 2015-01-05 | OFF-ENG-MEP-DR1100, OFF-PRO-MEP-DR1050, BL1-FN-B2-1060 | 131.5d | 0d | Cash Flow [547.83 h]; Plumber [48 h]; Excavation [6] | 547.83 | MEP | PL & D | 1st Fix | 2f |
| BL1-MEP-PL-B2-2020 |  | Drainage Pipes Gravity Test | 6d | 2015-01-06 | 2015-01-12 | BL1-MEP-PL-B2-2000, BL1-MEP-PL-B2-1010, BL1-MEP-PL-B2-2010 | 131.5d | 0d | Cash Flow [820.24 h]; Plumber [48 h]; Excavation [6] | 820.24 | MEP | PL & D | 2nd Fix | 2f |
| BL1-MEP-PL-B2-3000 |  | Manhole Covers Installation | 6d | 2015-01-13 | 2015-01-19 | BL1-MEP-PL-B2-2020, BL1-FN-B2-1060 | 365d | 24d | Cash Flow [44.96 h]; Plumber [37.5 h]; Excavation [6] | 44.96 | MEP | PL & D | Final F | 2f |
| BL1-MEP-PL-B2-2050 |  | Sump Pumps Installation Including Connection | 21d | 2015-03-16 | 2015-04-08 | BL1-MEP-PL-B2-2040, OFF-PRO-MEP-DR1130, OFF-ENG-MEP-WS1160, OFF-ENG-MEP-WS1170 | 281d | 221d | Cash Flow [2558.28 h]; Plumber [450 h]; Excavation [21] | 2,558.28 | MEP | PL & D | 2nd Fix | 2f |
|  | 4 | **Final Fix** |  | 2015-03-02 | 2015-03-22 |  |  |  |  |  |  |  |  |  |
| BL1-MEP-PL-B2-3010 |  | Sanitary Ware Installation Including Connection | 12d | 2015-03-02 | 2015-03-15 | BL1-MEP-PL-B2-2040, BL1-MEP-PL-B2-2020, OFF-PRO-MEP-WS1140, BL1-FN-B2-1050, BL1-FN-B2-1060, BL1-FN-B2-1070, BL1-FN-B2-1090 | 132.5d | 0d | Cash Flow [4439.52 h]; Plumber [383.86 h]; Excavation [12] | 4,439.52 | MEP | PL & D | Final F | ff |
| BL1-MEP-PL-B2-3020 |  | Sanitary Ware Accessories Installation | 6d | 2015-03-16 | 2015-03-22 | BL1-MEP-PL-B2-3010, BL1-FN-B2-1050 | 146.5d | 43d | Cash Flow [160.22 h]; Plumber [36.45 h]; Excavation [6] | 160.22 | MEP | PL & D | Final F | ff |

| ID | WBS | Activity | Duration | Start | Finish | Predecessors | Total float | Free float | Resources | Cost | Responsibility | MEP Systems | MEP Steps | Fix |
| --- | --- | --- | --- | --- | --- | --- | --- | --- | --- | --- | --- | --- | --- | --- |
|  | 3 | **Fire Fighting Works** |  | 2014-09-23 | 2015-06-26 |  |  |  |  |  |  |  |  |  |
|  | 1 | **1st Fix** |  | 2014-09-23 | 2014-10-11 |  |  |  |  |  |  |  |  |  |
| BL1-MEP-FF-B2-1000 |  | Supports and Hungers installation | 12d | 2014-09-23 | 2014-10-11 | OFF-ENG-MEP-FF1090, OFF-PRO-MEP-DR1020, BL1-FN-B2-1000 | 173.5d | 12d | Cash Flow [35.86 h]; Plumber [288 h]; Excavation [12] | 35.86 | MEP | FF | 1st Fix | 1f |
|  | 3 | **2nd Fix** |  | 2014-12-10 | 2015-01-12 |  |  |  |  |  |  |  |  |  |
| BL1-MEP-FF-B2-2000 |  | Fire Fighting Pipes and Fittings Installation | 21d | 2014-12-10 | 2015-01-05 | BL1-MEP-FF-B2-1000, OFF-PRO-MEP-FF1070, BL1-FN-B2-1010 | 125.5d | 0d | Cash Flow [286.84 h]; Plumber [1008 h]; Excavation [21] | 286.84 | MEP | FF | 2nd Fix | 2f |
| BL1-MEP-FF-B2-2010 |  | Fire Fighting Pipes Pressure Test | 6d | 2015-01-06 | 2015-01-12 | BL1-MEP-FF-B2-2000 | 131.5d | 0d | Cash Flow [35.86 h]; Plumber [96 h]; Excavation [6] | 35.86 | MEP | FF | 2nd Fix | 2f |
|  | 4 | **Final Fix** |  | 2015-01-13 | 2015-06-26 |  |  |  |  |  |  |  |  |  |
| BL1-MEP-FF-B2-3000 |  | Fire Extinguisher Installation | 2d | 2015-01-13 | 2015-01-14 | BL1-MEP-FF-B2-2010, BL1-FN-B2-1050 | 333d | 143d | Cash Flow [7501.02 h]; Plumber [383.86 h]; Excavation [2] | 7,501.02 | MEP | FF | Final F | ff |
| BL1-MEP-FF-B2-3010 |  | Hose reel Cabinet Installation and Connection | 6d | 2015-06-21 | 2015-06-26 | BL1-MEP-FF-B2-2010, BL1-FN-B2-1050, BL1-MEP-RZR-120 | 60.5d | 0d | Cash Flow [1331.34 h]; Plumber [37.5 h]; Excavation [6] | 1,331.34 | MEP | FF | Final F | ff |
|  | 3 | **Electrical System** |  | 2014-09-13 | 2015-07-06 |  |  |  |  |  |  |  |  |  |
|  | 1 | **1st Fix** |  | 2014-09-13 | 2014-09-25 |  |  |  |  |  |  |  |  |  |
| BL1-MEP-EL-B2-1000 |  | PVC Back Boxes and Conduits Fixing in Wall | 12d | 2014-09-13 | 2014-09-25 | ENGMEP8620, ENGMEP8810, ENGMEP9030, ENGMEP9190, ENGMEP9470, ENGMEP9610, PROCMEPELE1990, PROCMEPELE2080, BL1-FN-B2-1000 SS+3d, BL1-FN-B2-1000 FF+3d | 143.5d | 12d | Cash Flow [3307.67 h]; Electrician [384 h]; Excavation [12] | 3,307.67 | MEP | EL | 1st Fix | 1f |
| BL1-MEP-EL-B2-1010 |  | DB's Inclosure Fixing | 6d | 2014-09-20 | 2014-09-25 | ENGMEP8620, ENGMEP8810, BL1-FN-B2-1000 FS-3d | 149.5d | 21d | Cash Flow [2130.4 h]; Electrician [96 h]; Excavation [6] | 2,130.4 | MEP | EL | 1st Fix | 1f |
|  | 2 | **2nd Fix** |  | 2014-11-05 | 2014-12-31 |  |  |  |  |  |  |  |  |  |
| BL1-MEP-EL-B2-2000 |  | Cable Tray and Trunking Installation | 21d | 2014-11-05 | 2014-11-29 | PROCMEPELE3340, BL1-FN-B2-1010, PROCMEPELE6940 | 161.5d | 6d | Cash Flow [9064.45 h]; Electrician [336 h]; Excavation [21] | 9,064.45 | MEP | EL | 2nd Fix | 2f |
| BL1-MEP-EL-B2-2020 |  | Lighting Wiring | 12d | 2014-11-05 | 2014-11-18 | BL1-MEP-EL-B2-1000, PROCMEPELE5680, BL1-FN-B2-1010 | 176.5d | 15d | Cash Flow [3566.08 h]; Electrician [241.71 h]; Excavation [12] | 3,566.08 | MEP | EL | 2nd Fix | 2f |
| BL1-MEP-EL-B2-2030 |  | Power Points Wiring | 12d | 2014-11-05 | 2014-11-18 | BL1-MEP-EL-B2-1000, PROCMEPELE5680, BL1-FN-B2-1010 | 164.5d | 3d | Cash Flow [2894.21 h]; Electrician [192 h]; Excavation [12] | 2,894.21 | MEP | EL | 2nd Fix | 2f |
| BL1-MEP-EL-B2-2050 |  | Emergency Light Wiring | 8d | 2014-11-05 | 2014-11-13 | BL1-MEP-EL-B2-1000, PROCMEPELE9330, BL1-FN-B2-1010 | 180.5d | 22d | Cash Flow [1202.03 h]; Electrician [128 h]; Excavation [8] | 1,202.03 | MEP | EL | 2nd Fix | 2f |
| BL1-MEP-EL-B2-2060 |  | DB's Installation and Termination | 12d | 2014-11-23 | 2014-12-06 | BL1-MEP-EL-B2-1010, PROCMEPELE8920, BL1-MEP-EL-B2-2030, BL1-FN-B2-1020 | 161.5d | 0d | Cash Flow [4970.93 h]; Electrician [288 h]; Excavation [12] | 4,970.93 | MEP | EL | 2nd Fix | 2f |
| BL1-MEP-EL-B2-2070 |  | SMDB's Installation | 6d | 2014-11-23 | 2014-11-29 | BL1-MEP-EL-B2-1000, PROCMEPELE9380, PROCMEPELE4780, PROCMEPELE7660, BL1-FN-B2-1020 | 170.5d | 6d | Cash Flow [4970.93 h]; Electrician [48 h]; Excavation [6] | 4,970.93 | MEP | EL | 2nd Fix | 2f |
| BL1-MEP-EL-B2-2010 |  | Fire Alarm System Wiring | 12d | 2014-12-02 | 2014-12-15 | BL1-MEP-EL-B2-1000, PROCMEPELE8650, BL1-FN-B2-1010 | 153.5d | 0d | Cash Flow [7111.01 h]; Electrician [192 h]; Excavation [12] | 7,111.01 | MEP | EL | 2nd Fix | 2f |
| BL1-MEP-EL-B2-3050 |  | Power Cable Puling | 14d | 2014-12-07 | 2014-12-22 | BL1-MEP-EL-B2-2000, BL1-MEP-EL-B2-2020, BL1-MEP-EL-B2-2030, BL1-MEP-EL-B2-2060, BL1-MEP-EL-B2-2070, BL1-FN-B2-1020 | 199.5d | 16d | Cash Flow [13632.3 h]; Electrician [168 h]; Excavation [14] | 13,632.33 | MEP | EL | 2nd Fix | 2f |
| BL1-MEP-EL-B2-2040 |  | BMS System Wiring | 8d | 2014-12-23 | 2014-12-31 | BL1-MEP-EL-B2-1000, PROCMEPELE9100, BL1-FN-B2-1010 | 139.5d | 0d | Cash Flow [15183.4 h]; Electrician [186 h]; Excavation [8] | 15,183.44 | MEP | EL | 2nd Fix | 2f |
|  | 3 | **Final Fix** |  | 2015-01-26 | 2015-07-06 |  |  |  |  |  |  |  |  |  |
| BL1-MEP-EL-B2-3010 |  | Fire Alarm System Detector Installation | 12d | 2015-01-26 | 2015-02-08 | BL1-MEP-EL-B2-2010, BL1-FN-B2-1070 | 170.5d | 37d | Cash Flow [4034.38 h]; Electrician [192 h]; Excavation [12] | 4,034.38 | MEP | EL | Final F | ff |
| BL1-MEP-EL-B2-3020 |  | Lights Fitting Fixing | 14d | 2015-01-26 | 2015-02-10 | BL1-MEP-EL-B2-2020, PROCMEPELE8560, BL1-FN-B2-1070 | 164.5d | 77d | Cash Flow [7322.66 h]; Electrician [244 h]; Excavation [14] | 7,322.66 | MEP | EL | Final F | ff |
| BL1-MEP-EL-B2-3030 |  | Emergency Light Fixing | 8d | 2015-01-26 | 2015-02-03 | BL1-MEP-EL-B2-2050, BL1-FN-B2-1070 | 182.5d | 41d | Cash Flow [5714.02 h]; Electrician [128 h]; Excavation [8] | 5,714.02 | MEP | EL | Final F | ff |
| BL1-MEP-EL-B2-3060 |  | SMDB's Termination and Final Connection | 6d | 2015-01-26 | 2015-02-01 | BL1-MEP-EL-B2-2070, BL1-MEP-EL-B2-3050, BL1-FN-B2-1070 | 182.5d | 43d | Cash Flow [2785.83 h]; Electrician [192 h]; Excavation [6] | 2,785.82 | MEP | EL | Final F | ff |
| BL1-MEP-EL-B2-3040 |  | Sockets and Switches Fixing | 8d | 2015-03-26 | 2015-04-04 | BL1-MEP-EL-B2-2030, PROCMEPELE8830, BL1-MEP-EL-B2-2040, BL1-FN-B2-1060, BL1-FN-B2-1070 | 131.5d | 0d | Cash Flow [1166.96 h]; Electrician [128 h]; Excavation [8] | 1,166.96 | MEP | EL | Final F | ff |
| BL1-MEP-EL-B2-3000 |  | CO2 System Installation | 6d | 2015-07-01 | 2015-07-06 | BL1-MEP-EL-B2-1000, BL1-FN-B2-1030, BL1-FN-B2-1100 | 190d | 0d | Cash Flow [21027.8 h]; Electrician [179.65 h]; Excavation [6] | 21,027.76 | MEP | EL | Final F | ff |

| ID | WBS | Activity | Duration | Start | Finish | Predecessors | Total float | Free float | Resources | Cost | Finishing | Structural | Responsibility | MEP Systems | MEP Steps |
| --- | --- | --- | --- | --- | --- | --- | --- | --- | --- | --- | --- | --- | --- | --- | --- |
|  | 2 | **Fiishing** |  | 2014-08-19 | 2015-06-30 |  |  |  |  |  |  |  |  |  |  |
| BL1-FN-B2-1000 |  | Block Works | 30d | 2014-08-19 | 2014-09-22 | ENG-TYP-APP1000, ENG-BW-APP-POD1000, ENG-BW-APP-POD1010, ENG-WA-APP-POD1000, ENG-WA-APP-POD1010, BL1-ST-B1-1070 FS+12d, BL1-ST-GF-1070 | 128.5d | 0d | Cash Flow [7637.84 h]; MNHRS [574.5 h]; BW [150]; Excavation [30] | 7,637.84 | FIN |  |  |  |  |
| BL1-FN-B2-1010 |  | Plaster | 30d | 2014-09-23 | 2014-11-04 | BL1-FN-B2-1000, BL1-MEP-PL-B2-1010 FF+6d, BL1-MEP-PL-B2-1000 FF+6d, BL1-MEP-EL-B2-1010 FF+6d, BL1-MEP-EL-B2-1000 FF+6d | 131.5d | 0d | MNHRS [591 h]; Cash Flow [6945.75 h]; Plaster [197]; Excavation [30] | 6,945.75 | FIN |  |  |  |  |
| BL1-FN-B2-1020 |  | Paint 1st Coat | 15d | 2014-11-05 | 2014-11-22 | BL1-FN-B2-1010, A1150, ENG-FS-APP-BL11000 | 131.5d | 0d | MNHRS [121.5 h]; Cash Flow [733.13 h]; Painting [135]; Excavation [15] | 733.13 | FIN |  |  |  |  |
| BL1-FN-B2-1030 |  | Ceiling Paint | 10d | 2014-11-17 | 2014-11-27 | BL1-FN-B2-1020 SS+10d | 131.5d | 0d | MNHRS [19.8 h]; Cash Flow [119.45 h]; Painting [22]; Excavation [10] | 119.45 | FIN |  |  |  |  |
| BL1-FN-B2-1040 |  | Waterproofing | 5d | 2014-11-29 | 2014-12-03 | BL1-FN-B2-1030, A1300, ENG-WP-APP1000 | 131.5d | 0d | MNHRS [3.3 h]; Cash Flow [64.7 h]; Waterproofing [11]; Excavation [5] | 64.7 | FIN |  |  |  |  |
| BL1-FN-B2-1050 |  | Wall Tiling | 10d | 2014-11-29 | 2014-12-09 | BL1-FN-B2-1030 | 149.5d | 23d | MNHRS [620 h]; Cash Flow [2750.98 h]; Tiling [62]; Excavation [10] | 2,750.98 | FIN |  |  |  |  |
| BL1-FN-B2-1060 |  | Flooring Works | 20d | 2014-12-04 | 2014-12-27 | BL1-FN-B2-1040, A1100, A1050 | 131.5d | 0d | MNHRS [144.5 h]; Cash Flow [3367.88 h]; Tiling [22]; Excavation [20] | 3,367.88 | FIN |  |  |  |  |
| BL1-FN-B2-1070 |  | False Ceiling | 15d | 2015-01-08 | 2015-01-25 | BL1-FN-B2-1050, A1550, BL1-MEP-EL-B2-2000 FF+6d, BL1-MEP-EL-B2-2020 FF+6d, BL1-MEP-EL-B2-2030 FF+6d, BL1-MEP-EL-B2-2050 FF+6d, BL1-MEP-EL-B2-2040 FF+6d, BL1-MEP-EL-B2-2010 FF+6d, BL1-MEP-PL-B2-2020 FF+6d, BL1-MEP-PL-B2-2040 FF+6d, BL1-MEP-AC-B2-2010 FF+6d, BL1-MEP-FF-B2-2010 FF+6d, BL1-MEP-EL-B2-2060 FF+6d | 126.5d | 0d | Cash Flow [2013.73 h]; False Ceiling [48]; MNHRS [240 h]; Excavation [15] | 2,013.73 | FIN |  |  |  |  |
| BL1-FN-B2-1080 |  | Hand Rails for Stairs | 15d | 2015-01-26 | 2015-02-11 | BL1-FN-B2-1070, A1400, ENG-MW-APP1000, ENG-MW-APP1010, ENG-SC-APP-POD1000, ENG-SC-APP-POD1010 | 126.5d | 0d | Cash Flow [9483.79 h]; Metal Works & Handrail [20]; MNHRS [43 h]; Excavation [15] | 9,483.79 | FIN |  |  |  |  |
| BL1-FN-B2-1090 |  | Doors Installation | 15d | 2015-02-12 | 2015-03-01 | BL1-FN-B2-1080, A1200, A1250, A1450, A1500, ENG-SI-APP1000, ENG-DS-APP-POD1000, ENG-DS-APP-POD1010 | 126.5d | 0d | Cash Flow [31138.5 h]; Excavation [15] | 31,138.46 | FIN |  |  |  |  |
| BL1-FN-B2-1100 |  | Final Paint | 10d | 2015-06-21 | 2015-06-30 | BL1-FN-B2-1060, BL1-MEP-AC-B2-3000 FF+4d, BL1-MEP-EL-B2-3020 FF+4d, BL1-MEP-EL-B2-3030 FF+4d, BL1-MEP-EL-B2-3010 FF+4d, BL1-MEP-EL-B2-3040 FF+4d, BL1-MEP-EL-B2-2060 FF+4d, BL1-MEP-EL-B2-2070 FF+4d, BL1-MEP-PL-B2-3010 FF+4d, BL1-MEP-PL-B2-3020 FF+4d, BL1-MEP-FF-B2-3000 FF+4d, BL1-MEP-FF-B2-3010 FF+4d, BL1-MEP-EL-B2-3060 FF+4d | 190d | 0d | Excavation [10] |  | FIN |  |  |  |  |
|  | 2 | **Basement 1** |  | 2014-04-06 | 2015-07-12 |  |  |  |  |  |  |  |  |  |  |
|  | 1 | **Structural** |  | 2014-04-06 | 2014-06-15 |  |  |  |  |  |  |  |  |  |  |
| BL1-ST-B1-1000 |  | Reinforcement for Verticals | 23d | 2014-04-06 | 2014-05-03 | ENG-STR-APP130, ENG-STR-APP140, ENG-STR-APP150, ENG-STR-APP160, ENG-STR-BL1-APP100, ENG-STR-BL1-APP110, ENG-STR-BL1-APP120, BL1-ST-B2-1060 FS+3d | 60.5d | 0d | MNHRS [946.63 h]; Cash Flow [63290 h]; Reinforcement [50230.1]; Excavation [23] | 63,289.96 |  | STR |  |  |  |
| BL1-ST-B1-1020 |  | FW for Verticals | 12d | 2014-05-04 | 2014-05-17 | BL1-ST-B1-1000 | 60.5d | 3d | MNHRS [4941.11 h]; Cash Flow [21723.3 h]; FW [697.6]; Excavation [12] | 21,723.26 |  | STR |  |  |  |
| BL1-ST-B1-1010 |  | MEP Works in Vertical Element | 5d | 2014-05-15 | 2014-05-20 | ENGMEP8620, BL1-ST-B1-1000 FF | 57.5d | 0d | Cash Flow [1798.55 h]; Electrician [160 h]; Excavation [5] | 1,798.55 |  |  | MEP | EL | B.W |
| BL1-ST-B1-1030 |  | Concrete Verticals | 1d | 2014-05-21 | 2014-05-21 | BL1-ST-B1-1020, BL1-ST-B1-1010 | 57.5d | 0d | MNHRS [945.62 h]; Cash Flow [15873.5 h]; Concrete [115]; Excavation [1] | 15,873.45 |  | STR |  |  |  |
| BL1-ST-B1-1040 |  | FW for Slab | 8d | 2014-05-22 | 2014-05-31 | BL1-ST-B1-1030, ENG-STR-APP170, ENG-STR-APP180 | 57.5d | 0d | MNHRS [9113 h]; Cash Flow [35667.8 h]; FW [1145.4]; Excavation [8] | 35,667.76 |  | STR |  |  |  |
| BL1-ST-B1-1050 |  | Reinforcement for Slab | 12d | 2014-06-01 | 2014-06-14 | BL1-ST-B1-1040 | 57.5d | 0d | MNHRS [949.94 h]; Cash Flow [63511.6 h]; Reinforcement [50406]; Excavation [12] | 63,511.56 |  | STR |  |  |  |
| BL1-ST-B1-1060 |  | MEP Works in Slab & Beams | 5d | 2014-06-09 | 2014-06-14 | ENGMEP8620, BL1-ST-B1-1050 FF | 57.5d | 0d | Cash Flow [3349.02 h]; Electrician [320 h]; Excavation [5] | 3,349.02 |  |  | MEP | EL | B.W |
| BL1-ST-B1-1070 |  | Concrete for Slab | 1d | 2014-06-15 | 2014-06-15 | BL1-ST-B1-1050, BL1-ST-B1-1060 | 57.5d | 0d | MNHRS [2484.44 h]; Cash Flow [41704.4 h]; Concrete [302.1]; Excavation [1] | 41,704.38 |  | STR |  |  |  |
|  | 2 | **Fiishing** |  | 2014-09-28 | 2015-07-06 |  |  |  |  |  |  |  |  |  |  |
| BL1-FN-B1-1000 |  | Block Works | 20d | 2014-09-28 | 2014-10-26 | BL1-ST-GF-1070 FS+12d, BL1-ST-1F-1070 | 116.5d | 0d | Cash Flow [7637.84 h]; MNHRS [574.5 h]; BW [150]; Excavation [20] | 7,637.84 | FIN |  |  |  |  |
| BL1-FN-B1-1010 |  | Plaster | 18d | 2014-11-19 | 2014-12-09 | BL1-FN-B1-1000, BL1-MEP-PL-B1-1000, BL1-MEP-PL-B1-1020, BL1-MEP-PL-B1-1010, BL1-MEP-EL-B1-1010, BL1-MEP-EL-B1-1000 | 116.5d | 0d | MNHRS [738.9 h]; Cash Flow [8684.33 h]; Plaster [246.3]; Excavation [18] | 8,684.33 | FIN |  |  |  |  |
| BL1-FN-B1-1020 |  | Paint 1st Coat | 15d | 2014-12-10 | 2014-12-27 | BL1-FN-B1-1010 | 116.5d | 0d | MNHRS [151.8 h]; Cash Flow [916.43 h]; Painting [169]; Excavation [15] | 916.43 | FIN |  |  |  |  |
| BL1-FN-B1-1030 |  | Ceiling Paint | 10d | 2014-12-22 | 2015-01-04 | BL1-FN-B1-1020 SS+10d | 116.5d | 0d | MNHRS [39.6 h]; Cash Flow [238.95 h]; Painting [44]; Excavation [10] | 238.95 | FIN |  |  |  |  |
| BL1-FN-B1-1040 |  | Waterproofing | 5d | 2015-01-05 | 2015-01-10 | BL1-FN-B1-1030 | 116.5d | 0d | MNHRS [3.3 h]; Cash Flow [64.35 h]; Waterproofing [11]; Excavation [5] | 64.35 | FIN |  |  |  |  |
| BL1-FN-B1-1050 |  | Wall Tiling | 10d | 2015-01-05 | 2015-01-15 | BL1-FN-B1-1030 | 134.5d | 42d | MNHRS [776 h]; Cash Flow [3443.52 h]; Tiling [77.6]; Excavation [10] | 3,443.52 | FIN |  |  |  |  |
| BL1-FN-B1-1060 |  | Flooring Works | 20d | 2015-01-11 | 2015-02-02 | BL1-FN-B1-1040 | 116.5d | 0d | MNHRS [818 h]; Cash Flow [19061.8 h]; Tiling [124.5]; Excavation [20] | 19,061.75 | FIN |  |  |  |  |
| BL1-FN-B1-1070 |  | False Ceiling | 15d | 2015-03-07 | 2015-03-23 | BL1-FN-B1-1050, BL1-MEP-PL-B1-2030 FF+6d, BL1-MEP-PL-B1-2040 FF+6d, BL1-MEP-AC-B1-2010 FF+6d, BL1-MEP-EL-B1-2000 FF+6d, BL1-MEP-EL-B1-2020 FF+6d, BL1-MEP-EL-B1-2030 FF+6d, BL1-MEP-EL-B1-2050 FF+6d, BL1-MEP-EL-B1-2040 FF+6d, BL1-MEP-EL-B1-2010 FF+6d, BL1-MEP-FF-B1-2010 FF+6d, BL1-MEP-EL-B1-2060 FF+6d, BL1-MEP-EL-B1-2070 FF+6d | 92.5d | 0d | Cash Flow [2013.82 h]; False Ceiling [48]; MNHRS [240 h]; Excavation [15] | 2,013.82 | FIN |  |  |  |  |
| BL1-FN-B1-1080 |  | Hand Rails for Stairs | 15d | 2015-03-24 | 2015-04-09 | BL1-FN-B1-1070 | 92.5d | 0d | Cash Flow [9483.79 h]; Metal Works & Handrail [20]; MNHRS [43 h]; Excavation [15] | 9,483.79 | FIN |  |  |  |  |
| BL1-FN-B1-1090 |  | Doors Installation | 15d | 2015-04-11 | 2015-04-27 | BL1-FN-B1-1080, BL1-FN-B2-1090 | 92.5d | 0d | Cash Flow [31765.1 h]; Excavation [15] | 31,765.06 | FIN |  |  |  |  |
| BL1-FN-B1-1100 |  | Final Paint | 10d | 2015-06-27 | 2015-07-06 | BL1-FN-B1-1060, BL1-MEP-AC-B1-3000 FF+4d, BL1-MEP-EL-B1-3020 FF+4d, BL1-MEP-EL-B1-3030 FF+4d, BL1-MEP-EL-B1-3010 FF+4d, BL1-MEP-EL-B1-3040 FF+4d, BL1-MEP-PL-B1-3010 FF+4d, BL1-MEP-PL-B1-3020 FF+4d, BL1-MEP-FF-B1-3010 FF+4d | 190d | 0d | Excavation [10] |  | FIN |  |  |  |  |

| ID | WBS | Activity | Duration | Start | Finish | Predecessors | Total float | Free float | Resources | Cost | Responsibility | MEP Systems | MEP Steps | Fix |
| --- | --- | --- | --- | --- | --- | --- | --- | --- | --- | --- | --- | --- | --- | --- |
|  | 3 | **MEP Work** |  | 2014-10-15 | 2015-07-12 |  |  |  |  |  |  |  |  |  |
|  | 1 | **Mechanical System** |  | 2014-10-27 | 2015-07-02 |  |  |  |  |  |  |  |  |  |
|  | 2 | **HVAC Works** |  | 2014-10-27 | 2015-05-23 |  |  |  |  |  |  |  |  |  |
|  | 1 | **1st Fix** |  | 2014-10-27 | 2014-12-02 |  |  |  |  |  |  |  |  |  |
| BL1-MEP-AC-B1-1000 |  | Supports and Hungers Fixing | 30d | 2014-10-27 | 2014-12-02 | BL1-MEP-AC-B2-1000, OFF-ENG-MEP-AC1140, BL1-FN-B1-1000 | 138.5d | 4d | Cash Flow [118.11 h]; Ductman [192 h]; Excavation [30] | 118.11 | MEP | AC | 1st Fix | 1f |
|  | 3 | **2nd Fix** |  | 2014-12-31 | 2015-02-11 |  |  |  |  |  |  |  |  |  |
| BL1-MEP-AC-B1-2000 |  | Fresh Air Duct and Extract Duct Installation | 21d | 2014-12-31 | 2015-01-26 | BL1-MEP-AC-B1-1000, BL1-MEP-AC-B2-2000, BL1-FN-B1-1010 | 114.5d | 0d | Cash Flow [2008.38 h]; Ductman [1008 h]; Excavation [21] | 2,008.38 | MEP | AC | 2nd Fix | 2f |
| BL1-MEP-AC-B1-2010 |  | Duct Accessories Installation | 14d | 2015-01-27 | 2015-02-11 | BL1-MEP-AC-B1-1000, BL1-MEP-AC-B1-2000, BL1-MEP-AC-B2-2010 | 120.5d | 7d | Cash Flow [236.17 h]; Pipe Fitter - CHW [448 h]; Excavation [14] | 236.17 | MEP | AC | 2nd Fix | 2f |
|  | 4 | **Final Fix** |  | 2015-05-12 | 2015-05-23 |  |  |  |  |  |  |  |  |  |
| BL1-MEP-AC-B1-3000 |  | Grills and Diffusers Fixing | 10d | 2015-05-12 | 2015-05-23 | BL1-MEP-AC-B1-2010, BL1-MEP-AC-B2-3000, BL1-FN-B1-1070 | 93.5d | 0d | Cash Flow [416.81 h]; Ductman [320 h]; Excavation [10] | 416.81 | MEP | AC | Final F | ff |
|  | 1 | **Plumbing and Drainage Works** |  | 2014-10-27 | 2015-05-18 |  |  |  |  |  |  |  |  |  |
|  | 1 | **1st Fix** |  | 2014-10-27 | 2014-11-18 |  |  |  |  |  |  |  |  |  |
| BL1-MEP-PL-B1-1000 |  | Low Level Water Supply Pipes Installation | 18d | 2014-10-27 | 2014-11-18 | BL1-MEP-PL-B2-1000, OFF-ENG-MEP-WS1100, BL1-FN-B1-1000 | 116.5d | 0d | Cash Flow [713.22 h]; Plumber [42 h]; Excavation [18] | 713.22 | MEP | PL & D | 1st Fix | 1f |
| BL1-MEP-PL-B1-1010 |  | Low Level Drainage Pipes Installation | 18d | 2014-10-27 | 2014-11-18 | BL1-MEP-PL-B2-1010, OFF-ENG-MEP-DR1110, BL1-FN-B1-1000 | 116.5d | 0d | Cash Flow [82.43 h]; Plumber [12.67 h]; Excavation [18] | 82.43 | MEP | PL & D | 1st Fix | 1f |
| BL1-MEP-PL-B1-1020 |  | Supports installation for High level Pipes | 12d | 2014-10-27 | 2014-11-11 | BL1-MEP-PL-B2-1020, OFF-ENG-MEP-DR1110, BL1-FN-B1-1000 | 122.5d | 6d | Cash Flow [819.68 h]; Plumber [16.35 h]; Excavation [12] | 819.68 | MEP | PL & D | 1st Fix | 1f |
|  | 3 | **2nd Fix** |  | 2014-12-10 | 2015-02-23 |  |  |  |  |  |  |  |  |  |
| BL1-MEP-PL-B1-2000 |  | High Level Drainage Pipes Installation | 21d | 2014-12-10 | 2015-01-05 | BL1-MEP-PL-B1-1020, BL1-MEP-PL-B1-1010, BL1-FN-B1-1010, BL1-MEP-PL-B2-2000 | 140.5d | 4d | Cash Flow [6562.53 h]; Plumber [244.38 h]; Excavation [21] | 6,562.53 | MEP | PL & D | 2nd Fix | 2f |
| BL1-MEP-PL-B1-2010 |  | High Level Water Supply Pipes and Fittings Installation | 21d | 2014-12-16 | 2015-01-11 | BL1-MEP-PL-B1-1020, BL1-MEP-PL-B1-1000, BL1-MEP-PL-B2-2030, BL1-FN-B1-1010 | 135.5d | 0d | Cash Flow [1308.6 h]; Plumber [150.02 h]; Excavation [21] | 1,308.6 | MEP | PL & D | 2nd Fix | 2f |
| BL1-MEP-PL-B1-2040 |  | Water Supply Pipes Pressure Test | 6d | 2015-01-12 | 2015-01-18 | BL1-MEP-PL-B1-2010, BL1-MEP-PL-B1-1000, BL1-MEP-PL-B2-2040 | 141.5d | 15d | Cash Flow [145.74 h]; Plumber [48 h]; Excavation [6] | 145.74 | MEP | PL & D | 2nd Fix | 2f |
| BL1-MEP-PL-B1-2020 |  | Parking Drain Installation | 6d | 2015-02-03 | 2015-02-09 | BL1-MEP-PL-B2-2010, OFF-ENG-MEP-DR1110, BL1-FN-B1-1060 | 116.5d | 0d | Cash Flow [547.83 h]; Plumber [48 h]; Excavation [6] | 547.83 | MEP | PL & D | 1st Fix | 2f |
| BL1-MEP-PL-B1-2030 |  | Drainage Pipes Gravity Test | 6d | 2015-02-10 | 2015-02-16 | BL1-MEP-PL-B1-2000, BL1-MEP-PL-B1-1010, BL1-MEP-PL-B1-2020, BL1-MEP-PL-B2-2020 | 116.5d | 0d | Cash Flow [820.24 h]; Plumber [48 h]; Excavation [6] | 820.24 | MEP | PL & D | 2nd Fix | 2f |
| BL1-MEP-PL-B1-3000 |  | Manhole Covers Installation | 6d | 2015-02-17 | 2015-02-23 | BL1-MEP-PL-B1-2030, BL1-MEP-PL-B2-3000, BL1-FN-B1-1060 | 341d | 259d | Cash Flow [488.57 h]; Plumber [37.5 h]; Excavation [6] | 488.57 | MEP | PL & D | Final F | 2f |
|  | 4 | **Final Fix** |  | 2015-04-28 | 2015-05-18 |  |  |  |  |  |  |  |  |  |
| BL1-MEP-PL-B1-3010 |  | Sanitary Ware Installation Including Connection | 12d | 2015-04-28 | 2015-05-11 | BL1-MEP-PL-B1-2040, BL1-MEP-PL-B1-2030, BL1-MEP-PL-B2-3010, BL1-FN-B1-1060, BL1-FN-B1-1050, BL1-FN-B1-1070, BL1-FN-B1-1090 | 95.5d | 0d | Cash Flow [4439.52 h]; Plumber [383.86 h]; Excavation [12] | 4,439.52 | MEP | PL & D | Final F | ff |
| BL1-MEP-PL-B1-3020 |  | Sanitary Ware Accessories Installation | 6d | 2015-05-12 | 2015-05-18 | BL1-MEP-PL-B1-3010, BL1-MEP-PL-B2-3020 | 103.5d | 11d | Cash Flow [160.22 h]; Plumber [36.45 h]; Excavation [6] | 160.22 | MEP | PL & D | Final F | ff |

| ID | WBS | Activity | Duration | Start | Finish | Predecessors | Total float | Free float | Resources | Cost | Responsibility | MEP Systems | MEP Steps | Fix |
| --- | --- | --- | --- | --- | --- | --- | --- | --- | --- | --- | --- | --- | --- | --- |
|  | 3 | **Fire Fighting Works** |  | 2014-10-27 | 2015-07-02 |  |  |  |  |  |  |  |  |  |
|  | 1 | **1st Fix** |  | 2014-10-27 | 2014-11-11 |  |  |  |  |  |  |  |  |  |
| BL1-MEP-FF-B1-1000 |  | Supports and Hungers installation | 12d | 2014-10-27 | 2014-11-11 | BL1-MEP-FF-B2-1000, OFF-ENG-MEP-FF1100, BL1-FN-B1-1000, BL1-MEP-FF-B2-1000 FF | 170.5d | 45d | Cash Flow [35.86 h]; Plumber [288 h]; Excavation [12] | 35.86 | MEP | FF | 1st Fix | 1f |
|  | 3 | **2nd Fix** |  | 2015-01-06 | 2015-02-05 |  |  |  |  |  |  |  |  |  |
| BL1-MEP-FF-B1-2000 |  | Fire Fighting Pipes and Fittings Installation | 21d | 2015-01-06 | 2015-01-29 | BL1-MEP-FF-B1-1000, BL1-MEP-FF-B2-2000, BL1-FN-B1-1010 | 125.5d | 0d | Cash Flow [286.84 h]; Plumber [1008 h]; Excavation [21] | 286.84 | MEP | FF | 2nd Fix | 2f |
| BL1-MEP-FF-B1-2010 |  | Fire Fighting Pipes Pressure Test | 6d | 2015-01-31 | 2015-02-05 | BL1-MEP-FF-B1-2000, BL1-MEP-FF-B2-2010 | 125.5d | 33d | Cash Flow [35.86 h]; Plumber [96 h]; Excavation [6] | 35.86 | MEP | FF | 2nd Fix | 2f |
|  | 4 | **Final Fix** |  | 2015-06-27 | 2015-07-02 |  |  |  |  |  |  |  |  |  |
| BL1-MEP-FF-B1-3010 |  | Hose reel Cabinet Installation and Connection | 6d | 2015-06-27 | 2015-07-02 | BL1-MEP-FF-B1-2010, BL1-MEP-FF-B2-3010, BL1-FN-B1-1050, BL1-FN-B1-1070 | 60.5d | 0d | Cash Flow [1330.85 h]; Plumber [192 h]; Excavation [6] | 1,330.85 | MEP | FF | Final F | ff |
| BL1-MEP-FF-B1-3000 |  | Fire Extinguisher Installation | 2d | 2015-06-28 | 2015-06-29 | BL1-MEP-FF-B1-2010, BL1-MEP-FF-B2-3000, BL1-FN-B1-1050, BL1-FN-B1-1100 SS+1d | 218d | 4d | Cash Flow [1074.99 h]; Plumber [8 h]; Excavation [2] | 1,074.99 | MEP | FF | Final F | ff |
|  | 3 | **Electrical System** |  | 2014-10-15 | 2015-07-12 |  |  |  |  |  |  |  |  |  |
|  | 1 | **1st Fix** |  | 2014-10-15 | 2014-11-04 |  |  |  |  |  |  |  |  |  |
| BL1-MEP-EL-B1-1000 |  | PVC Back Boxes and Conduits Fixing in Wall | 12d | 2014-10-15 | 2014-10-29 | ENGMEP9620, ENGMEP9480, ENGMEP9200, ENGMEP9040, ENGMEP8820, ENGMEP8620, PROCMEPELE1990, PROCMEPELE2080, BL1-FN-B1-1000 SS+3d, BL1-FN-B1-1000 FF+3d, BL1-MEP-EL-B2-1000 | 131.5d | 15d | Cash Flow [3307.67 h]; Electrician [384 h]; Excavation [12] | 3,307.67 | MEP | EL | 1st Fix | 1f |
| BL1-MEP-EL-B1-1010 |  | DB's Inclosure Fixing | 6d | 2014-10-27 | 2014-11-04 | ENGMEP8820, ENGMEP8620, BL1-FN-B1-1000, BL1-MEP-EL-B2-1010 | 128.5d | 12d | Cash Flow [2130.4 h]; Electrician [96 h]; Excavation [6] | 2,130.4 | MEP | EL | 1st Fix | 1f |
|  | 2 | **2nd Fix** |  | 2014-12-10 | 2015-03-16 |  |  |  |  |  |  |  |  |  |
| BL1-MEP-EL-B1-2000 |  | Cable Tray and Trunking Installation | 21d | 2014-12-10 | 2015-01-05 | PROCMEPELE3340, BL1-MEP-EL-B2-2000, BL1-FN-B1-1010 | 152.5d | 4d | Cash Flow [9064.45 h]; Electrician [336 h]; Excavation [21] | 9,064.45 | MEP | EL | 2nd Fix | 2f |
| BL1-MEP-EL-B1-2020 |  | Lighting Wiring | 12d | 2014-12-10 | 2014-12-23 | BL1-MEP-EL-B1-1000, PROCMEPELE5680, BL1-FN-B1-1010, BL1-MEP-EL-B2-2020 | 161.5d | 13d | Cash Flow [3566.08 h]; Electrician [241.71 h]; Excavation [12] | 3,566.08 | MEP | EL | 2nd Fix | 2f |
| BL1-MEP-EL-B1-2030 |  | Power Points Wiring | 12d | 2014-12-10 | 2014-12-23 | BL1-MEP-EL-B1-1000, PROCMEPELE5680, BL1-FN-B1-1010, BL1-MEP-EL-B2-2030 | 149.5d | 3d | Cash Flow [2894.21 h]; Electrician [192 h]; Excavation [12] | 2,894.21 | MEP | EL | 2nd Fix | 2f |
| BL1-MEP-EL-B1-2050 |  | Emergency Light Wiring | 8d | 2014-12-10 | 2014-12-18 | BL1-MEP-EL-B1-1000, PROCMEPELE9330, BL1-FN-B1-1010, BL1-MEP-EL-B2-2050 | 165.5d | 17d | Cash Flow [1202.03 h]; Electrician [128 h]; Excavation [8] | 1,202.03 | MEP | EL | 2nd Fix | 2f |
| BL1-MEP-EL-B1-2010 |  | Fire Alarm System Wiring | 12d | 2014-12-16 | 2014-12-29 | BL1-MEP-EL-B1-1000, PROCMEPELE8650, BL1-FN-B1-1010, BL1-MEP-EL-B2-2010 | 156.5d | 8d | Cash Flow [7111.01 h]; Electrician [192 h]; Excavation [12] | 7,111.01 | MEP | EL | 2nd Fix | 2f |
| BL1-MEP-EL-B1-2060 |  | DB's Installation and Termination | 12d | 2014-12-28 | 2015-01-12 | BL1-MEP-EL-B1-1010, PROCMEPELE8920, BL1-MEP-EL-B1-2030, BL1-MEP-EL-B2-2060, BL1-FN-B1-1020 | 146.5d | 0d | Cash Flow [4970.93 h]; Electrician [288 h]; Excavation [12] | 4,970.93 | MEP | EL | 2nd Fix | 2f |
| BL1-MEP-EL-B1-2040 |  | BMS System Wiring | 8d | 2015-01-04 | 2015-01-12 | BL1-MEP-EL-B1-1000, PROCMEPELE9100, BL1-FN-B1-1010, BL1-MEP-EL-B2-2040 | 146.5d | 54d | Cash Flow [15183.4 h]; Electrician [186 h]; Excavation [8] | 15,183.44 | MEP | EL | 2nd Fix | 2f |
| BL1-MEP-EL-B1-3050 |  | Power Cable Puling | 14d | 2015-01-13 | 2015-01-28 | BL1-MEP-EL-B1-2000, BL1-MEP-EL-B1-2020, BL1-MEP-EL-B1-2030, BL1-MEP-EL-B1-2060, BL1-MEP-EL-B2-3050 | 183.5d | 11d | Cash Flow [13632.3 h]; Electrician [168 h]; Excavation [14] | 13,632.33 | MEP | EL | 2nd Fix | 2f |
| BL1-MEP-EL-B1-2070 |  | SMDB's , MDB's Installation | 12d | 2015-03-03 | 2015-03-16 | BL1-MEP-EL-B1-1000, PROCMEPELE9190, BL1-FN-B1-1020, BL1-MEP-EL-B2-2070 | 92.5d | 0d | Cash Flow [4196.6 h]; Electrician [336 h]; Excavation [12] | 4,196.6 | MEP | EL | 2nd Fix | 2f |
|  | 3 | **Final Fix** |  | 2015-03-24 | 2015-07-12 |  |  |  |  |  |  |  |  |  |
| BL1-MEP-EL-B1-3010 |  | Fire Alarm System Detector Installation | 12d | 2015-03-24 | 2015-04-06 | BL1-MEP-EL-B1-2010, BL1-FN-B1-1070, BL1-MEP-EL-B2-3010 | 133.5d | 0d | Cash Flow [4034.38 h]; Electrician [192 h]; Excavation [12] | 4,034.38 | MEP | EL | Final F | ff |
| BL1-MEP-EL-B1-3030 |  | Emergency Light Fixing | 8d | 2015-03-24 | 2015-04-01 | BL1-MEP-EL-B1-2050, BL1-FN-B1-1070, BL1-MEP-EL-B2-3030 | 141.5d | 0d | Cash Flow [5714.02 h]; Electrician [128 h]; Excavation [8] | 5,714.02 | MEP | EL | Final F | ff |
| BL1-MEP-EL-B1-3060 |  | SMDB's , MDB's Termination and Final Connection | 12d | 2015-03-24 | 2015-04-06 | BL1-MEP-EL-B1-2070, BL1-MEP-EL-B2-3060, BL1-MEP-EL-B1-3050, BL1-FN-B1-1070 | 139.5d | 0d | Cash Flow [20725.6 h]; Electrician [384 h]; Excavation [12] | 20,725.64 | MEP | EL | Final F | ff |
| BL1-MEP-EL-B1-3040 |  | Sockets and Switches Fixing | 8d | 2015-04-05 | 2015-04-13 | BL1-MEP-EL-B1-2030, PROCMEPELE8830, BL1-MEP-EL-B1-2040, BL1-FN-B1-1070, BL1-MEP-EL-B2-3040 | 131.5d | 0d | Cash Flow [1166.96 h]; Electrician [128 h]; Excavation [8] | 1,166.96 | MEP | EL | Final F | ff |
| BL1-MEP-EL-B1-3020 |  | Lights Fitting Fixing | 14d | 2015-05-12 | 2015-05-27 | BL1-MEP-EL-B1-2020, PROCMEPELE8560, BL1-FN-B1-1070, BL1-MEP-EL-B2-3020, PROCMEPELE4510 | 87.5d | 0d | Cash Flow [7322.66 h]; Electrician [244 h]; Excavation [14] | 7,322.66 | MEP | EL | Final F | ff |
| BL1-MEP-EL-B1-3000 |  | CO2 System Installation | 6d | 2015-07-07 | 2015-07-12 | BL1-MEP-EL-B2-3000, BL1-MEP-EL-B1-1000, BL1-FN-B1-1030, BL1-FN-B1-1100 | 190d | 60d | Cash Flow [21027.8 h]; Electrician [179.65 h]; Excavation [6] | 21,027.76 | MEP | EL | Final F | ff |

| ID | WBS | Activity | Duration | Start | Finish | Predecessors | Total float | Free float | Resources | Cost | Structural | Responsibility | MEP Systems | MEP Steps | Finishing | Fix |
| --- | --- | --- | --- | --- | --- | --- | --- | --- | --- | --- | --- | --- | --- | --- | --- | --- |
|  | 3 | **Ground Floor** |  | 2014-06-16 | 2015-12-14 |  |  |  |  |  |  |  |  |  |  |  |
|  | 1 | **Structural** |  | 2014-06-16 | 2014-08-18 |  |  |  |  |  |  |  |  |  |  |  |
| BL1-ST-GF-1000 |  | Reinforcement for Verticals | 12d | 2014-06-16 | 2014-06-30 | BL1-ST-B1-1070 | 57.5d | 0d | MNHRS [946.63 h]; Cash Flow [63290 h]; Reinforcement [50230]; Excavation [12] | 63,289.96 | STR |  |  |  |  |  |
| BL1-ST-GF-1010 |  | MEP Works in Vertical Element | 5d | 2014-06-25 | 2014-06-30 | ENGMEP8630, BL1-ST-GF-1000 FF | 65.5d | 8d | Cash Flow [1798.55 h]; Electrician [160 h]; Excavation [5] | 1,798.55 |  | MEP | EL | B.W |  |  |
| BL1-ST-GF-1020 |  | FW for Verticals | 8d | 2014-07-01 | 2014-07-16 | BL1-ST-GF-1000 | 57.5d | 0d | MNHRS [7269 h]; Cash Flow [26683.9 h]; FW [856.9]; Excavation [8] | 26,683.87 | STR |  |  |  |  |  |
| BL1-ST-GF-1030 |  | Concrete Verticals | 1d | 2014-07-17 | 2014-07-18 | BL1-ST-GF-1020, BL1-ST-GF-1010 | 57.5d | 0d | MNHRS [1165.58 h]; Cash Flow [19565.8 h]; Concrete [142]; Excavation [1] | 19,565.75 | STR |  |  |  |  |  |
| BL1-ST-GF-1040 |  | FW for Slab | 8d | 2014-07-19 | 2014-08-03 | BL1-ST-GF-1030, ENG-STR-APP230, ENG-STR-APP240 | 57.5d | 0d | MNHRS [8651 h]; Cash Flow [32759.3 h]; FW [1052]; Excavation [8] | 32,759.28 | STR |  |  |  |  |  |
| BL1-ST-GF-1050 |  | Reinforcement for Slab | 12d | 2014-08-04 | 2014-08-17 | BL1-ST-GF-1040 | 57.5d | 0d | MNHRS [1034 h]; Cash Flow [63511.6 h]; Reinforcement [50406]; Excavation [12] | 63,511.56 | STR |  |  |  |  |  |
| BL1-ST-GF-1060 |  | MEP Works in Slab & Beams | 5d | 2014-08-12 | 2014-08-17 | ENGMEP8630, BL1-ST-GF-1050 FF | 57.5d | 0d | Cash Flow [3349.02 h]; Electrician [320 h]; Excavation [5] | 3,349.02 |  | MEP | EL | B.W |  |  |
| BL1-ST-GF-1070 |  | Concrete for Slab | 1d | 2014-08-18 | 2014-08-18 | BL1-ST-GF-1050, BL1-ST-GF-1060 | 57.5d | 0d | MNHRS [2277.72 h]; Cash Flow [38234.3 h]; Concrete [277]; Excavation [1] | 38,234.31 | STR |  |  |  |  |  |
|  | 2 | **Fiishing** |  | 2014-11-15 | 2015-07-12 |  |  |  |  |  |  |  |  |  |  |  |
| BL1-FN-GF-1000 |  | Block Works | 20d | 2014-11-15 | 2014-12-07 | ENG-BW-APP-BL11000, ENG-BW-APP-BL11010, ENG-BW-APP-BL11020, ENG-BW-APP-BL11030, ENG-WA-APP-BL11000, ENG-WA-APP-BL11010, ENG-WA-APP-BL11020, ENG-WA-APP-BL11030, BL1-ST-1F-1070 FS+12d, BL1-ST-2F-1070 | 101.5d | 0d | Cash Flow [32150.2 h]; MNHRS [2418.26 h]; BW [632]; Excavation [20] | 32,150.22 |  |  |  |  | FIN |  |
| BL1-FN-GF-1010 |  | Plaster | 15d | 2014-12-22 | 2015-01-10 | BL1-FN-GF-1000, BL1-MEP-PL-GF-1000, BL1-MEP-PL-GF-1010 | 101.5d | 0d | MNHRS [2706 h]; Cash Flow [31804 h]; Plaster [902]; Excavation [15] | 31,803.97 |  |  |  |  | FIN |  |
| BL1-FN-GF-1020 |  | Paint 1st Coat | 15d | 2015-01-11 | 2015-01-27 | BL1-FN-GF-1010 | 101.5d | 0d | MNHRS [271 h]; Cash Flow [4898.38 h]; Painting [902]; Excavation [15] | 4,898.38 |  |  |  |  | FIN |  |
| BL1-FN-GF-1030 |  | Ceiling Paint | 10d | 2015-01-28 | 2015-02-08 | BL1-FN-GF-1020 | 101.5d | 0d | MNHRS [29.34 h]; Cash Flow [177.03 h]; Painting [32.6]; Excavation [10] | 177.03 |  |  |  |  | FIN |  |
| BL1-FN-GF-1040 |  | Waterproofing | 5d | 2015-02-09 | 2015-02-14 | BL1-FN-GF-1030 | 101.5d | 0d | MNHRS [7 h]; Cash Flow [131.28 h]; Waterproofing [22.32]; Excavation [5] | 131.28 |  |  |  |  | FIN |  |
| BL1-FN-GF-1050 |  | Wall Tiling | 19d | 2015-02-09 | 2015-03-02 | BL1-FN-GF-1030 | 110.5d | 9d | MNHRS [1797 h]; Cash Flow [7974.74 h]; Tiling [180]; Excavation [19] | 7,974.74 |  |  |  |  | FIN |  |
| BL1-FN-GF-1060 |  | Flooring Works | 20d | 2015-02-15 | 2015-03-09 | BL1-FN-GF-1040, ENG-FT-APP-BL11000, ENG-FT-APP-BL11010, ENG-FT-APP-BL11020 | 101.5d | 0d | MNHRS [1919 h]; Cash Flow [44727.4 h]; Tiling [292]; Excavation [20] | 44,727.37 |  |  |  |  | FIN |  |
| BL1-FN-GF-1070 |  | False Ceiling | 15d | 2015-03-14 | 2015-03-30 | BL1-FN-GF-1050, ENG-FC-APP-BL11000, ENG-FC-APP-BL11010, ENG-FC-APP-BL11020, ENG-FC-APP-BL11030, BL1-MEP-AC-GF-2070 FF+6d, BL1-MEP-EL-GF-2040 FF+6d, BL1-MEP-EL-GF-2050 FF+6d, BL1-MEP-EL-GF-2010 FF+6d, BL1-MEP-EL-GF-2070 FF+6d, BL1-MEP-EL-GF-2000 FF+6d, BL1-MEP-EL-GF-2060 FF+6d, BL1-MEP-PL-GF-2040 FF+6d, BL1-MEP-PL-GF-2030 FF+6d, BL1-MEP-AC-GF-2040 FF+6d, BL1-MEP-EL-GF-2080 FF+6d | 101.5d | 0d | Cash Flow [37087.3 h]; False Ceiling [884]; MNHRS [4420 h]; Excavation [15] | 37,087.28 |  |  |  |  | FIN |  |
| BL1-FN-GF-1080 |  | Hand Rails for Stairs | 15d | 2015-03-31 | 2015-04-16 | BL1-FN-GF-1070, ENG-SC-APP-BL11000 | 101.5d | 0d | Cash Flow [9483.79 h]; Metal Works & Handrail [20]; MNHRS [43 h]; Excavation [15] | 9,483.79 |  |  |  |  | FIN |  |
| BL1-FN-GF-1090 |  | Doors Installation/ Aluminum Doors | 15d | 2015-04-28 | 2015-05-14 | BL1-FN-GF-1080, ENG-DS-APP-BL11000, ENG-DS-APP-BL11010, ENG-DS-APP-BL11020, ENG-DS-APP-BL11030, BL1-FN-B1-1090 | 92.5d | 0d | Cash Flow [37078.2 h]; Excavation [15] | 37,078.24 |  |  |  |  | FIN |  |
| BL1-FN-GF-1100 |  | Final Paint | 10d | 2015-07-03 | 2015-07-12 | BL1-FN-GF-1060, BL1-MEP-AC-GF-3000 FF+4d, BL1-MEP-EL-GF-3040 FF+4d, BL1-MEP-EL-GF-3000 FF+4d, BL1-MEP-EL-GF-3010 FF+4d, BL1-MEP-EL-GF-3020 FF+4d, BL1-MEP-EL-GF-3050 FF+4d, BL1-MEP-EL-GF-2030 FF+4d, BL1-MEP-EL-GF-2080 FF+4d, BL1-MEP-PL-GF-3000 FF+4d, BL1-MEP-PL-GF-3010 FF+4d, BL1-MEP-FF-GF-3010 FF+4d, BL1-MEP-EL-GF-3030 FF+4d, BL1-MEP-EL-GF-3070 FF+4d | 60.5d | 0d | Excavation [10] |  |  |  |  |  | FIN |  |
|  | 3 | **MEP Work** |  | 2014-11-27 | 2015-12-14 |  |  |  |  |  |  |  |  |  |  |  |
|  | 1 | **Mechanical System** |  | 2014-12-08 | 2015-07-08 |  |  |  |  |  |  |  |  |  |  |  |
|  | 2 | **HVAC Works** |  | 2014-12-08 | 2015-06-05 |  |  |  |  |  |  |  |  |  |  |  |
|  | 1 | **1st Fix** |  | 2014-12-08 | 2014-12-21 |  |  |  |  |  |  |  |  |  |  |  |
| BL1-MEP-AC-GF-1000 |  | Supports and Hungers Fixing | 12d | 2014-12-08 | 2014-12-21 | BL1-MEP-AC-B1-1000, OFF-ENG-MEP-AC1150, BL1-FN-GF-1000 | 142.5d | 12d | Cash Flow [326.47 h]; Ductman [192 h]; Excavation [12] | 326.47 |  | MEP | AC | 1st Fix |  | 1f |

| ID | WBS | Activity | Duration | Start | Finish | Predecessors | Total float | Free float | Resources | Cost | Responsibility | MEP Systems | MEP Steps | Fix |
| --- | --- | --- | --- | --- | --- | --- | --- | --- | --- | --- | --- | --- | --- | --- |
|  | 3 | **2nd Fix** |  | 2015-01-11 | 2015-03-08 |  |  |  |  |  |  |  |  |  |
| BL1-MEP-AC-GF-2000 |  | Chilled Water Pipes and Fittings Installation | 21d | 2015-01-11 | 2015-02-03 | BL1-MEP-AC-GF-1000, OFF-PRO-MEP-AC1170, BL1-FN-GF-1010 | 127.5d | 0d | Cash Flow [5230.19 h]; Pipe Fitter - CHW [840 h]; Excavation [21] | 5,230.19 | MEP | AC | 2nd Fix | 2f |
| BL1-MEP-AC-GF-2010 |  | Fresh Air Duct and Extract Duct Installation and Insulation | 21d | 2015-01-27 | 2015-02-19 | BL1-MEP-AC-GF-1000, OFF-PRO-MEP-AC1020, OFF-PRO-MEP-AC1050, BL1-FN-GF-1010, BL1-MEP-AC-B1-2000 | 114.5d | 0d | Cash Flow [5549.65 h]; Ductman [1008 h]; Excavation [21] | 5,549.65 | MEP | AC | 2nd Fix | 2f |
| BL1-MEP-AC-GF-2020 |  | Chilled Water Pipes Pressure Test | 6d | 2015-02-04 | 2015-02-10 | BL1-MEP-AC-GF-2000 | 127.5d | 0d | Cash Flow [581.12 h]; Pipe Fitter - CHW [96 h]; Excavation [6] | 581.12 | MEP | AC | 2nd Fix | 2f |
| BL1-MEP-AC-GF-2030 |  | Chilled Water Pipes Insulation | 12d | 2015-02-11 | 2015-02-24 | BL1-MEP-AC-GF-2020, OFF-PRO-MEP-AC1050 | 253d | 12d | Cash Flow [1658.21 h]; Pipe Fitter - CHW [384 h]; Excavation [12] | 1,658.21 | MEP | AC | 2nd Fix | 2f |
| BL1-MEP-AC-GF-2050 |  | FCU's Installation | 8d | 2015-02-17 | 2015-02-25 | BL1-MEP-AC-GF-1000, OFF-PRO-MEP-AC1320, BL1-FN-GF-1010 | 114.5d | 0d | Cash Flow [5992.06 h]; Pipe Fitter - CHW [192 h]; Excavation [8] | 5,992.06 | MEP | AC | 2nd Fix | 2f |
| BL1-MEP-AC-GF-2040 |  | Duct Accessories Installation | 14d | 2015-02-21 | 2015-03-08 | BL1-MEP-AC-GF-2010, OFF-PRO-MEP-AC1080, OFF-PRO-MEP-AC1110, BL1-MEP-AC-B1-2010 | 114.5d | 7d | Cash Flow [652.97 h]; Pipe Fitter - CHW [448 h]; Excavation [14] | 652.97 | MEP | AC | 2nd Fix | 2f |
| BL1-MEP-AC-GF-2060 |  | Valve Package Installation | 6d | 2015-02-26 | 2015-03-04 | BL1-MEP-AC-GF-2050, BL1-MEP-AC-GF-2020 | 114.5d | 0d | Cash Flow [2380.49 h]; Pipe Fitter - CHW [96 h]; Excavation [6] | 2,380.49 | MEP | AC | 2nd Fix | 2f |
| BL1-MEP-AC-GF-2070 |  | FCU's Drain Pipes Installation | 3d | 2015-03-05 | 2015-03-08 | BL1-MEP-AC-GF-2050, BL1-MEP-AC-GF-2060 | 114.5d | 8d | Cash Flow [516.93 h]; Pipe Fitter - CHW [48 h]; Excavation [3] | 516.93 | MEP | AC | 2nd Fix | 2f |
|  | 4 | **Final Fix** |  | 2015-05-24 | 2015-06-05 |  |  |  |  |  |  |  |  |  |
| BL1-MEP-AC-GF-3000 |  | Grills and Diffusers Fixing | 12d | 2015-05-24 | 2015-06-05 | BL1-MEP-AC-GF-2040, BL1-MEP-AC-B1-3000, OFF-PRO-MEP-AC1140, BL1-FN-GF-1070 | 93.5d | 0d | Cash Flow [11538.6 h]; Ductman [384 h]; Excavation [12] | 11,538.61 | MEP | AC | Final F |  |
|  | 1 | **Plumbing and Drainage Works** |  | 2014-12-08 | 2015-06-06 |  |  |  |  |  |  |  |  |  |
|  | 1 | **1st Fix** |  | 2014-12-08 | 2014-12-21 |  |  |  |  |  |  |  |  |  |
| BL1-MEP-PL-GF-1000 |  | Low Level Water Supply Pipes Installation | 12d | 2014-12-08 | 2014-12-21 | BL1-MEP-PL-B1-1000, OFF-ENG-MEP-WS1110, BL1-FN-GF-1000 | 101.5d | 0d | Cash Flow [713.22 h]; Plumber [42 h]; Excavation [12] | 713.22 | MEP | PL & D | 1st Fix | 1f |
| BL1-MEP-PL-GF-1010 |  | Low Level Drainage Pipes Installation | 12d | 2014-12-08 | 2014-12-21 | BL1-MEP-PL-B1-1010, OFF-ENG-MEP-DR1030, BL1-FN-GF-1000 | 101.5d | 0d | Cash Flow [82.43 h]; Plumber [12.67 h]; Excavation [12] | 82.43 | MEP | PL & D | 1st Fix | 1f |
| BL1-MEP-PL-GF-1020 |  | Supports installation for High level Pipes | 12d | 2014-12-08 | 2014-12-21 | BL1-MEP-PL-B1-1020, OFF-ENG-MEP-DR1030, BL1-FN-GF-1000 | 151.5d | 12d | Cash Flow [819.68 h]; Plumber [16.35 h]; Excavation [12] | 819.68 | MEP | PL & D | 1st Fix | 1f |
|  | 3 | **2nd Fix** |  | 2015-01-11 | 2015-03-23 |  |  |  |  |  |  |  |  |  |
| BL1-MEP-PL-GF-2000 |  | High Level Drainage Pipes Installation | 21d | 2015-01-11 | 2015-02-03 | BL1-MEP-PL-GF-1020, BL1-MEP-PL-GF-1010, BL1-FN-GF-1010, BL1-MEP-PL-B1-2000 | 136.5d | 3d | Cash Flow [6562.53 h]; Plumber [244.38 h]; Excavation [21] | 6,562.53 | MEP | PL & D | 2nd Fix | 2f |
| BL1-MEP-PL-GF-2020 |  | High Level Water Supply Pipes and Fittings Installation | 21d | 2015-01-12 | 2015-02-04 | BL1-MEP-PL-GF-1020, BL1-MEP-PL-GF-1000, BL1-MEP-PL-B1-2010, BL1-FN-GF-1010 | 135.5d | 0d | Cash Flow [1308.6 h]; Plumber [150.02 h]; Excavation [21] | 1,308.6 | MEP | PL & D | 2nd Fix | 2f |
| BL1-MEP-PL-GF-2040 |  | Water Supply Pipes Pressure Test | 6d | 2015-02-05 | 2015-02-11 | BL1-MEP-PL-GF-2020, BL1-MEP-PL-GF-1000, BL1-MEP-PL-B1-2040 | 135.5d | 17d | Cash Flow [145.74 h]; Plumber [48 h]; Excavation [6] | 145.74 | MEP | PL & D | 2nd Fix | 2f |
| BL1-MEP-PL-GF-2010 |  | Floor Drain Installation | 6d | 2015-03-10 | 2015-03-16 | BL1-MEP-PL-B1-2020, OFF-ENG-MEP-DR1030, BL1-FN-GF-1060 | 101.5d | 0d | Cash Flow [548.14 h]; Plumber [6 h]; Excavation [6] | 548.14 | MEP | PL & D | 1st Fix | 2f |
| BL1-MEP-PL-GF-2030 |  | Drainage Pipes Gravity Test | 6d | 2015-03-17 | 2015-03-23 | BL1-MEP-PL-GF-2000, BL1-MEP-PL-GF-1010, BL1-MEP-PL-GF-2010, BL1-MEP-PL-B1-2030 | 101.5d | 0d | Cash Flow [820.24 h]; Plumber [48 h]; Excavation [6] | 820.24 | MEP | PL & D | 2nd Fix | 2f |
|  | 4 | **Final Fix** |  | 2015-05-16 | 2015-06-06 |  |  |  |  |  |  |  |  |  |
| BL1-MEP-PL-GF-3000 |  | Sanitary Ware Installation Including Connection | 14d | 2015-05-16 | 2015-05-31 | BL1-MEP-PL-GF-2040, BL1-MEP-PL-GF-2030, BL1-MEP-PL-B1-3010, BL1-FN-GF-1050, BL1-FN-GF-1060, BL1-FN-GF-1070, BL1-FN-GF-1090 | 92.5d | 0d | Cash Flow [4439.52 h]; Plumber [383.86 h]; Excavation [14] | 4,439.52 | MEP | PL & D | Final F | ff |
| BL1-MEP-PL-GF-3010 |  | Sanitary Ware Accessories Installation | 6d | 2015-06-01 | 2015-06-06 | BL1-MEP-PL-GF-3000, BL1-MEP-PL-B1-3020 | 92.5d | 9d | Cash Flow [160.22 h]; Plumber [36.45 h]; Excavation [6] | 160.22 | MEP | PL & D | Final F | ff |

| ID | WBS | Activity | Duration | Start | Finish | Predecessors | Total float | Free float | Resources | Cost | Responsibility | MEP Systems | MEP Steps | Fix |
| --- | --- | --- | --- | --- | --- | --- | --- | --- | --- | --- | --- | --- | --- | --- |
|  | 3 | **Fire Fighting Works** |  | 2015-07-03 | 2015-07-08 |  |  |  |  |  |  |  |  |  |
|  | 4 | **Final Fix** |  | 2015-07-03 | 2015-07-08 |  |  |  |  |  |  |  |  |  |
| BL1-MEP-FF-GF-3010 |  | Hose reel Cabinet Installation and Connection | 6d | 2015-07-03 | 2015-07-08 | BL1-MEP-FF-B1-3010, OFF-ENG-MEP-FF1110, BL1-FN-GF-1050, BL1-FN-GF-1070 | 60.5d | 0d | Cash Flow [1330.85 h]; Plumber [192 h]; Excavation [6] | 1,330.85 | MEP | FF | Final F | ff |
| BL1-MEP-FF-GF-3000 |  | Fire Extinguisher Installation | 2d | 2015-07-04 | 2015-07-05 | BL1-MEP-FF-B1-3000 FF+2d, OFF-ENG-MEP-FF1110, BL1-FN-GF-1050, BL1-FN-GF-1100 SS+1d | 214d | 0d | Cash Flow [1074.99 h]; Plumber [8 h]; Excavation [2] | 1,074.99 | MEP | FF | Final F | ff |
|  | 3 | **Electrical System** |  | 2014-11-27 | 2015-12-14 |  |  |  |  |  |  |  |  |  |
|  | 1 | **1st Fix** |  | 2014-11-27 | 2014-12-14 |  |  |  |  |  |  |  |  |  |
| BL1-MEP-EL-GF-1000 |  | PVC Back Boxes and Conduits Fixing in Wall | 12d | 2014-11-27 | 2014-12-10 | ENGMEP8630, ENGMEP8830, ENGMEP9050, ENGMEP9210, ENGMEP9490, ENGMEP9630, PROCMEPELE1990, PROCMEPELE2080, BL1-FN-GF-1000 SS+3d, BL1-FN-GF-1000 FF+3d, BL1-MEP-EL-B1-1000 | 154d | 12d | Cash Flow [3307.67 h]; Electrician [384 h]; Excavation [12] | 3,307.67 | MEP | EL | 1st Fix | 1f |
| BL1-MEP-EL-GF-1010 |  | DB's Inclosure Fixing | 6d | 2014-12-08 | 2014-12-14 | ENGMEP8630, ENGMEP8830, BL1-FN-GF-1000, BL1-MEP-EL-B1-1010 | 160d | 18d | Cash Flow [2130.4 h]; Electrician [96 h]; Excavation [6] | 2,130.4 | MEP | EL | 1st Fix | 1f |
|  | 2 | **2nd Fix** |  | 2015-01-11 | 2015-03-23 |  |  |  |  |  |  |  |  |  |
| BL1-MEP-EL-GF-2000 |  | Fire Alarm System Wiring | 12d | 2015-01-11 | 2015-01-24 | BL1-MEP-EL-GF-1000, PROCMEPELE8650, BL1-FN-GF-1010, BL1-MEP-EL-B1-2010 | 151.5d | 12d | Cash Flow [7111.01 h]; Electrician [192 h]; Excavation [12] | 7,111.01 | MEP | EL | 2nd Fix | 2f |
| BL1-MEP-EL-GF-2010 |  | Cable Tray and Trunking Installation | 14d | 2015-01-11 | 2015-01-26 | PROCMEPELE3340, BL1-MEP-EL-B1-2000, BL1-FN-GF-1010 | 149.5d | 10d | Cash Flow [9064.45 h]; Electrician [336 h]; Excavation [14] | 9,064.45 | MEP | EL | 2nd Fix | 2f |
| BL1-MEP-EL-GF-2040 |  | Lighting Wiring | 12d | 2015-01-11 | 2015-01-24 | BL1-MEP-EL-GF-1000, PROCMEPELE5680, BL1-FN-GF-1010, BL1-MEP-EL-B1-2020 | 151.5d | 12d | Cash Flow [3566.08 h]; Electrician [241.71 h]; Excavation [12] | 3,566.08 | MEP | EL | 2nd Fix | 2f |
| BL1-MEP-EL-GF-2050 |  | Power Points Wiring | 12d | 2015-01-11 | 2015-01-24 | BL1-MEP-EL-GF-1000, PROCMEPELE5680, BL1-FN-GF-1010, BL1-MEP-EL-B1-2030 | 139.5d | 3d | Cash Flow [2894.21 h]; Electrician [192 h]; Excavation [12] | 2,894.21 | MEP | EL | 2nd Fix | 2f |
| BL1-MEP-EL-GF-2070 |  | Emergency Light Wiring | 8d | 2015-01-11 | 2015-01-19 | BL1-MEP-EL-GF-1000, PROCMEPELE9330, BL1-FN-GF-1010, BL1-MEP-EL-B1-2050 | 155.5d | 16d | Cash Flow [1202.03 h]; Electrician [128 h]; Excavation [8] | 1,202.03 | MEP | EL | 2nd Fix | 2f |
| BL1-MEP-EL-GF-2060 |  | Low Current System Wiring | 14d | 2015-01-13 | 2015-01-28 | BL1-MEP-EL-GF-1000, PROCMEPELE7030, PROCMEPELE6400, PROCMEPELE6490, BL1-FN-GF-1010, PROCMEPELE6760 | 147.5d | 46d | Cash Flow [38217.8 h]; Electrician [244 h]; Excavation [14] | 38,217.78 | MEP | EL |  | 2f |
| BL1-MEP-EL-GF-2080 |  | DB's Installation and Termination | 12d | 2015-01-28 | 2015-02-10 | BL1-MEP-EL-GF-1010, PROCMEPELE8920, BL1-MEP-EL-GF-2050, BL1-MEP-EL-B1-2060, BL1-FN-GF-1020 | 136.5d | 0d | Cash Flow [4970.93 h]; Electrician [288 h]; Excavation [12] | 4,970.93 | MEP | EL | 2nd Fix | 2f |
| BL1-MEP-EL-GF-3060 |  | Power Cable Puling | 14d | 2015-02-11 | 2015-02-26 | BL1-MEP-EL-GF-2010, BL1-MEP-EL-GF-2040, BL1-MEP-EL-GF-2050, BL1-MEP-EL-B1-3050, BL1-MEP-EL-GF-2080 | 172.5d | 10d | Cash Flow [6361.76 h]; Electrician [168 h]; Excavation [14] | 6,361.76 | MEP | EL | 2nd Fix | 2f |
| BL1-MEP-EL-GF-2030 |  | SMDB's Installation | 6d | 2015-03-17 | 2015-03-23 | BL1-MEP-EL-GF-1000, BL1-FN-GF-1020, BL1-MEP-EL-B1-2070 | 151.5d | 0d | Cash Flow [4196.6 h]; Electrician [45 h]; Excavation [6] | 4,196.6 | MEP | EL | 2nd Fix | 2f |
|  | 3 | **Final Fix** |  | 2015-03-31 | 2015-06-11 |  |  |  |  |  |  |  |  |  |
| BL1-MEP-EL-GF-3030 |  | Despature for Low Current System Installation | 14d | 2015-03-31 | 2015-04-15 | BL1-MEP-EL-GF-2060, PROCMEPELE7480, BL1-FN-GF-1020, BL1-FN-GF-1070 | 127.5d | 1d | Cash Flow [72738.2 h]; Electrician [336 h]; Excavation [14] | 72,738.16 | MEP | EL |  | ff |
| BL1-MEP-EL-GF-3010 |  | Emergency Light Fixing | 8d | 2015-04-02 | 2015-04-11 | BL1-MEP-EL-GF-2070, BL1-FN-GF-1070, BL1-MEP-EL-B1-3030 | 141.5d | 9d | Cash Flow [5714.02 h]; Electrician [128 h]; Excavation [8] | 5,714.02 | MEP | EL | Final F | ff |
| BL1-MEP-EL-GF-3020 |  | Fire Alarm System Detector Installation | 12d | 2015-04-07 | 2015-04-20 | BL1-MEP-EL-GF-2000, BL1-FN-GF-1070, BL1-MEP-EL-B1-3010 | 133.5d | 1d | Cash Flow [4034.38 h]; Electrician [192 h]; Excavation [12] | 4,034.38 | MEP | EL | Final F | ff |
| BL1-MEP-EL-GF-3070 |  | SMDB's Termination and Final Connection | 6d | 2015-04-07 | 2015-04-13 | BL1-MEP-EL-GF-2030, BL1-MEP-EL-B1-3060, BL1-MEP-EL-GF-3060, BL1-FN-GF-1070 | 139.5d | 7d | Cash Flow [2785.83 h]; Electrician [192 h]; Excavation [6] | 2,785.82 | MEP | EL | Final F | ff |
| BL1-MEP-EL-GF-3050 |  | Sockets and Switches Fixing | 8d | 2015-04-14 | 2015-04-22 | BL1-MEP-EL-GF-2050, PROCMEPELE8830, BL1-FN-GF-1070, BL1-MEP-EL-B1-3040 | 131.5d | 0d | Cash Flow [1166.96 h]; Electrician [128 h]; Excavation [8] | 1,166.96 | MEP | EL | Final F | ff |
| BL1-MEP-EL-GF-3040 |  | Low Current System Outlet installation and Connection | 10d | 2015-04-18 | 2015-04-28 | BL1-MEP-EL-GF-3030, BL1-FN-GF-1080 | 126.5d | 66d | Cash Flow [3860.79 h]; Electrician [80 h]; Excavation [10] | 3,860.79 | MEP | EL |  | ff |
| BL1-MEP-EL-GF-3000 |  | Lights Fitting Fixing | 14d | 2015-05-28 | 2015-06-11 | BL1-MEP-EL-GF-2040, PROCMEPELE8560, BL1-FN-GF-1070, BL1-MEP-EL-B1-3020 | 87.5d | 0d | Cash Flow [7322.66 h]; Electrician [244 h]; Excavation [14] | 7,322.66 | MEP | EL | Final F | ff |

| ID | WBS | Activity | Type | Duration | Start | Finish | Predecessors | Total float | Free float | Resources | Cost | user_text8 | Difference dates | Responsibility | Trade-2 | Level-2 | Floor-2 | Division-2 | Sub Zone | Areas | Level 7 | Bldg | Fix |
| --- | --- | --- | --- | --- | --- | --- | --- | --- | --- | --- | --- | --- | --- | --- | --- | --- | --- | --- | --- | --- | --- | --- | --- |
|  | 12 | **Substation** |  |  | 2015-07-13 | 2015-12-14 |  |  |  |  |  |  |  |  |  |  |  |  |  |  |  |  |  |
| BL1-SUBST-GF-1000 |  | Access to Room (Plastered, Painted, Plinth/ Floor Paint Beneath Eqt & Doors) | milestone | 0d | 2015-07-13 | 2015-07-13 | BL1-FN-GF-1100, ENGMEP8900, ENGMEP8890, ENGMEP8880 | 60.5d | 0d |  |  | 0 | 0 | MEP | MEP | Parking | B1 | Const | T02 | PLANT | SS | T1 |  |
| BL1-SUBST-GF-1010 |  | Installation of Conduits and Accessories |  | 9d | 2015-07-14 | 2015-07-22 | BL1-SUBST-GF-1000 FS+1d | 60.5d | 0d | Electrician [54 h]; Cash Flow [524.88 h]; Excavation [9] | 524.88 | 694 | 0 | MEP | MEP | Parking | B1 | Const | T02 | PLANT | SS |  | 1f |
| BL1-SUBST-GF-1020 |  | Cable Ladder / Tray / Trunk Installation in Transformer Rooms |  | 13.5d | 2015-07-14 | 2015-07-27 | BL1-SUBST-GF-1000 FS+1d | 87d | 0d | Electrician [108 h]; Cash Flow [6135.28 h]; Excavation [13.5] | 6,135.28 | 8335 | 0 | MEP | MEP | Parking | B1 | Const | T02 | PLANT | SS |  | 1f |
| BL1-SUBST-GF-1030 |  | Cable Ladder / Tray / Trunk Installation in Generator Rooms |  | 13.5d | 2015-07-14 | 2015-07-27 | BL1-SUBST-GF-1000 FS+1d | 124d | 0d | Electrician [108 h]; Cash Flow [6315 h]; Excavation [13.5] | 6,315 | 8335 | 0 | MEP | MEP | Parking | B1 | Const | T02 | PLANT | SS |  | 1f |
| BL1-SUBST-GF-1040 |  | Cable Ladder / Tray / Trunk Installation in LV Switchgear Rooms |  | 13.5d | 2015-07-14 | 2015-07-27 | BL1-SUBST-GF-1000 FS+1d | 120d | 0d | Electrician [189 h]; Cash Flow [9833 h]; Excavation [13.5] | 9,833 | 14587 | 0 | MEP | MEP | Parking | B1 | Const | T02 | PLANT | SS |  | 1f |
| BL1-SUBST-GF-1050 |  | Cable Ladder / Tray / Trunk Installation in MV Switchgear Room |  | 13.5d | 2015-07-14 | 2015-07-27 | BL1-SUBST-GF-1000 FS+1d | 109.5d | 0d | Electrician [135.07 h]; Cash Flow [6706.18 h]; Excavation [13.5] | 6,706.18 | 10420 | 0 | MEP | MEP | Parking | B1 | Const | T02 | PLANT | SS |  | 1f |
| BL1-SUBST-GF-1060 |  | Installation of MEP High Level Services |  | 13.5d | 2015-07-19 | 2015-08-01 | BL1-SUBST-GF-1010 SS+5d | 60.5d | 0d | Ductman [76 h]; Cash Flow [9.86 h]; Excavation [13.5] | 9.86 | 14 | 0 | MEP | MEP | Parking | B1 | Const | T02 | PLANT | SS |  | 2f |
| BL1-SUBST-GF-1070 |  | Wiring for Lighting & Power |  | 4.5d | 2015-07-23 | 2015-07-27 | BL1-SUBST-GF-1010 | 106.5d | 46d | Electrician [181 h]; Cash Flow [153.41 h]; Excavation [4.5] | 153.41 | 208 | 0 | MEP | MEP | Parking | B1 | Const | T02 | PLANT | SS |  | 2f |
| BL1-SUBST-GF-1080 |  | HV Cabling In MV Room |  | 13.5d | 2015-07-24 | 2015-08-06 | BL1-SUBST-GF-1050 SS+10d, BL1-SUBST-GF-1050 FF+5d | 109.5d | 28d | Electrician [114 h]; Cash Flow [1115.51 h]; Excavation [13.5] | 1,115.51 | 1516 | 0 | MEP | MEP | Parking | B1 | Const | T02 | PLANT | SS |  | 2f |
| BL1-SUBST-GF-1090 |  | HV / LV Cabling In Transformer Rooms |  | 13.5d | 2015-07-24 | 2015-08-06 | BL1-SUBST-GF-1020 SS+10d, BL1-SUBST-GF-1020 FF+5d | 87d | 26.5d | Electrician [114 h]; Cash Flow [1115.51 h]; Excavation [13.5] | 1,115.51 | 1516 | 0 | MEP | MEP | Parking | B1 | Const | T02 | PLANT | SS |  | 2f |
| BL1-SUBST-GF-1100 |  | LV Cabling In Generator Rooms |  | 22.5d | 2015-07-24 | 2015-08-15 | BL1-SUBST-GF-1030 FF+5d, BL1-SUBST-GF-1030 SS+10d | 124d | 25d | Electrician [190.59 h]; Cash Flow [2465.51 h]; Excavation [22.5] | 2,465.51 | 3655 | 0 | MEP | MEP | Parking | B1 | Const | T02 | PLANT | SS |  | 2f |
| BL1-SUBST-GF-1110 |  | LV Cabling In LV Switchgear Rooms |  | 22.5d | 2015-07-24 | 2015-08-15 | BL1-SUBST-GF-1040 FF+5d, BL1-SUBST-GF-1040 SS+10d, PROCMEPELE9010 | 120d | 59d | Electrician [762 h]; Cash Flow [10804.4 h]; Excavation [22.5] | 10,804.41 | 14619 | 0 | MEP | MEP | Parking | B1 | Const | T02 | PLANT | SS |  | 2f |
| BL1-SUBST-GF-1120 |  | Fuel Pipe Installation |  | 15d | 2015-07-28 | 2015-08-11 | BL1-SUBST-GF-1000 FS+15d, BL1-SUBST-GF-1030 SS+5d | 124.5d | 32.5d | Pipe Fitter - FF [242.25 h]; Cash Flow [3382.68 h]; Excavation [15] | 3,382.68 | 4599 | 0 | MEP | MEP | Parking | B1 | Const | T02 | PLANT | SS |  | 2f |
| BL1-SUBST-GF-1130 |  | Extract fan Installation for Transformer Ventilation |  | 22.5d | 2015-07-29 | 2015-08-20 | BL1-SUBST-GF-1060 SS+10d, BL1-SUBST-GF-1060 FF+5d | 121d | 60d | Ductman [1330 h]; Cash Flow [11592.3 h]; Excavation [22.5] | 11,592.27 | 15743 | 0 | MEP | MEP | Parking | B1 | Const | T02 | PLANT | SS |  | 2f |
| BL1-SUBST-GF-1140 |  | Installation of LV Switchgears |  | 27d | 2015-08-03 | 2015-08-29 | BL1-SUBST-GF-1000 FS+5d, BL1-SUBST-GF-1060 SS+15d, PROCMEPELE9010 | 61d | 0d | Electrician [3480 h]; Cash Flow [273120 h]; Excavation [27] | 273,120.28 | 371042 | 0 | MEP | MEP | Parking | B1 | Const | T02 | PLANT | SS |  | 2f |
| BL1-SUBST-GF-1150 |  | Installation of MV Switchgear |  | 22.5d | 2015-08-19 | 2015-09-10 | BL1-SUBST-GF-1060 FS+18d, BL1-SUBST-GF-1000 FS+5d, PROCMEPELE9430 | 81.5d | 0d | Electrician [1886 h]; Cash Flow [150307 h]; Excavation [22.5] | 150,307.27 | 204194 | 0 | MEP | MEP | Parking | B1 | Const | T02 | PLANT | SS |  | 2f |
| BL1-SUBST-GF-1160 |  | Installation of Generators |  | 18d | 2015-08-19 | 2015-09-06 | BL1-SUBST-GF-1060 FS+18d, BL1-SUBST-GF-1000 FS+5d, PROCMEPELE9530 | 92d | 0d | Electrician [1694 h]; Cash Flow [214818 h]; Excavation [18] | 214,818.12 | 291833 | 0 | MEP | MEP | Parking | B1 | Const | T02 | PLANT | SS |  | 2f |
| BL1-SUBST-GF-1220 |  | Installation of Transformers |  | 15d | 2015-08-19 | 2015-09-03 | BL1-SUBST-GF-1060 FS+18d, BL1-SUBST-GF-1000 FS+5d, PROCMEPELE9280 | 60.5d | 0d | Electrician [1230 h]; Cash Flow [505874 h]; Excavation [15] | 505,874.15 | 687237 | 0 | MEP | MEP | Parking | B1 | Const | T02 | PLANT | SS |  | 2f |
| BL1-SUBST-GF-1170 |  | Cable Glanding & Termination in Generator Rooms |  | 18d | 2015-08-24 | 2015-09-11 | BL1-SUBST-GF-1160 FF+2d, BL1-SUBST-GF-1100 SS+5d, BL1-SUBST-GF-1160 SS+5d, BL1-SUBST-GF-1100 FF+2d | 99d | 38d | Electrician [212 h]; Cash Flow [10791.3 h]; Excavation [18] | 10,791.26 | 14660 | 0 | MEP | MEP | Parking | B1 | Const | T02 | PLANT | SS |  | 2f |
| BL1-SUBST-GF-1240 |  | Cable Glanding & Termination in Transformer Rooms |  | 18d | 2015-08-24 | 2015-09-11 | BL1-SUBST-GF-1070 FF, BL1-SUBST-GF-1220 SS+5d, BL1-SUBST-GF-1220 FF+2d, BL1-SUBST-GF-1090 SS+5d, BL1-SUBST-GF-1090 FF+2d | 60.5d | 0d | Electrician [154 h]; Cash Flow [13648 h]; Excavation [18] | 13,647.96 | 18543 | 0 | MEP | MEP | Parking | B1 | Const | T02 | PLANT | SS |  | 2f |
| BL1-SUBST-GF-1180 |  | Cable Glanding & Termination in MV Switchgear Rooms |  | 18d | 2015-08-26 | 2015-09-12 | BL1-SUBST-GF-1150 SS+5d, BL1-SUBST-GF-1080 FF+2d, BL1-SUBST-GF-1080 SS+5d, BL1-SUBST-GF-1150 FF+2d | 81.5d | 21d | Electrician [236 h]; Cash Flow [7377.9 h]; Excavation [18] | 7,377.9 | 10023 | 0 | MEP | MEP | Parking | B1 | Const | T02 | PLANT | SS |  | 2f |
| BL1-SUBST-GF-1190 |  | Installation of Fuel Tank for Generator |  | 15d | 2015-08-29 | 2015-09-13 | BL1-SUBST-GF-1000, BL1-SUBST-GF-1160 SS+10d | 92d | 0d | Pipe Fitter - FF [473.1 h]; Cash Flow [6670.02 h]; Excavation [15] | 6,670.02 | 9061 | 0 | MEP | MEP | Parking | B1 | Const | T02 | PLANT | SS |  | 2f |
| BL1-SUBST-GF-1200 |  | Installation of Emergency Central Battery Panel |  | 27d | 2015-08-30 | 2015-09-25 | BL1-SUBST-GF-1140 | 61d | 0d | Electrician [1282 h]; Cash Flow [22896.4 h]; Excavation [27] | 22,896.36 | 31105 | 0 | MEP | MEP | Parking | B1 | Const | T02 | PLANT | SS |  | 2f |
| BL1-SUBST-GF-1210 |  | Installation of Fuel Pump For Generator |  | 7.5d | 2015-09-03 | 2015-09-10 | BL1-SUBST-GF-1000, BL1-SUBST-GF-1160 SS+15d | 92.5d | 0.5d | Pipe Fitter - FF [51.3 h]; Cash Flow [5533.7 h]; Excavation [7.5] | 5,533.7 | 7518 | 0 | MEP | MEP | Parking | B1 | Const | T02 | PLANT | SS |  | 2f |
| BL1-SUBST-GF-1260 |  | Pre Commissioning Tests of Transformers |  | 22.5d | 2015-09-03 | 2015-09-25 | BL1-SUBST-GF-1240 FF+5d, BL1-SUBST-GF-1240 SS+10d | 60.5d | 0d | Electrician [154 h]; Cash Flow [2032.67 h]; Excavation [22.5] | 2,032.67 | 1855 | 0 | MEP | MEP | Parking | B1 | Const | T02 | PLANT | SS |  | 2f |
| BL1-SUBST-GF-1230 |  | Fuel Pipe Connection of Generator / Pump / Fuel Tank |  | 4.5d | 2015-09-14 | 2015-09-18 | BL1-SUBST-GF-1190 SS+10d, BL1-SUBST-GF-1120 SS+10d, BL1-SUBST-GF-1210 SS+10d, BL1-SUBST-GF-1210 FF+5d, BL1-SUBST-GF-1120 FF+5d, BL1-SUBST-GF-1190 FF+5d | 92d | 31d | Pipe Fitter - FF [42.75 h]; Cash Flow [178.61 h]; Excavation [4.5] | 178.61 | 243 | 0 | MEP | MEP | Parking | B1 | Const | T02 | PLANT | SS |  | 2f |
| BL1-SUBST-GF-1250 |  | Cable Glanding & Termination in LV Switchgear Rooms |  | 23.5d | 2015-09-26 | 2015-10-19 | BL1-SUBST-GF-1200, BL1-SUBST-GF-1140 SS+5d, BL1-SUBST-GF-1140 FF+2d, BL1-SUBST-GF-1110 SS+5d, BL1-SUBST-GF-1110 FF+2d | 61d | 0d | Electrician [435 h]; Cash Flow [13875.9 h]; Excavation [23.5] | 13,875.88 | 18851 | 0 | MEP | MEP | Parking | B1 | Const | T02 | PLANT | SS |  | 2f |
| BL1-SUBST-GF-1270 |  | Pre Commissioning Tests of MV Switchgears |  | 22.5d | 2015-09-26 | 2015-10-18 | BL1-SUBST-GF-1180 SS+10d, BL1-SUBST-GF-1180 FF+5d, BL1-SUBST-GF-1260 | 60.5d | 0d | Electrician [236 h]; Cash Flow [1097.97 h]; Excavation [22.5] | 1,097.97 | 1002 | 0 | MEP | MEP | Parking | B1 | Const | T02 | PLANT | SS |  | 2f |
| BL1-SUBST-GF-1280 |  | MEP Final Fix |  | 4.5d | 2015-10-19 | 2015-10-23 | BL1-SUBST-GF-1180, BL1-SUBST-GF-1170, BL1-SUBST-GF-1070, BL1-SUBST-GF-1060, BL1-SUBST-GF-1130, BL1-SUBST-GF-1250, BL1-SUBST-GF-1230, BL1-SUBST-GF-1270 FF | 61d | 0.5d | Electrician [23.75 h]; Cash Flow [3.29 h]; Excavation [4.5] | 3.29 | 5 | 0 | MEP | MEP | Parking | B1 | Const | T02 | PLANT | SS |  | ff |
| BL1-SUBST-GF-1290 |  | Pre Commissioning Tests of LV Switchgears |  | 22.5d | 2015-10-24 | 2015-11-15 | BL1-SUBST-GF-1270 FS+6d, BL1-SUBST-GF-1250 SS+10d, BL1-SUBST-GF-1250 FF+5d, BL1-SUBST-GF-1280 | 60.5d | 0d | Electrician [435 h]; Cash Flow [2065.55 h]; Excavation [22.5] | 2,065.55 | 1885 | 0 | MEP | MEP | Parking | B1 | Const | T02 | PLANT | SS |  | 2f |
| BL1-SUBST-GF-1300 |  | Pre Commissioning Tests of Generators |  | 22.5d | 2015-11-22 | 2015-12-14 | BL1-SUBST-GF-1290 FS+6d, BL1-SUBST-GF-1170 SS+10d, BL1-SUBST-GF-1230, BL1-SUBST-GF-1170 FF+5d | 60.5d | 22.5d | Electrician [212 h]; Cash Flow [1606.42 h]; Excavation [22.5] | 1,606.42 | 1466 | 0 | MEP | MEP | Parking | B1 | Const | T02 | PLANT | SS |  | 2f |

| ID | WBS | Activity | Duration | Start | Finish | Predecessors | Total float | Free float | Resources | Cost | Structural | Responsibility | MEP Systems | MEP Steps | Finishing | Fix |
| --- | --- | --- | --- | --- | --- | --- | --- | --- | --- | --- | --- | --- | --- | --- | --- | --- |
|  | 4 | **1st Floor** |  | 2014-08-19 | 2015-07-14 |  |  |  |  |  |  |  |  |  |  |  |
|  | 1 | **Structural** |  | 2014-08-19 | 2014-09-27 |  |  |  |  |  |  |  |  |  |  |  |
| BL1-ST-1F-1000 |  | Reinforcement for Verticals | 10d | 2014-08-19 | 2014-08-30 | ENG-STR-BL1-APP130, ENG-STR-BL1-APP140, ENG-STR-BL1-APP150, ENG-STR-BL1-APP160, ENG-STR-BL1-APP170, BL1-ST-GF-1070 | 57.5d | 0d | MNHRS [644.34 h]; Cash Flow [43079.3 h]; Reinforcement [34189.9]; Excavation [10] | 43,079.3 | STR |  |  |  |  |  |
| BL1-ST-1F-1010 |  | MEP Works in Vertical Element | 5d | 2014-08-25 | 2014-08-30 | ENGMEP8640, BL1-ST-1F-1000 FF | 63.5d | 6d | Cash Flow [1798.55 h]; Electrician [160 h]; Excavation [5] | 1,798.55 |  | MEP | EL | B.W |  |  |
| BL1-ST-1F-1020 |  | FW for Verticals | 6d | 2014-08-31 | 2014-09-06 | BL1-ST-1F-1000 | 57.5d | 0d | MNHRS [9030.13 h]; Cash Flow [39700.4 h]; FW [1274.9]; Excavation [6] | 39,700.39 | STR |  |  |  |  |  |
| BL1-ST-1F-1030 |  | Concrete Verticals | 1d | 2014-09-07 | 2014-09-07 | BL1-ST-1F-1020, BL1-ST-1F-1010 | 57.5d | 0d | MNHRS [1743.23 h]; Cash Flow [29262.4 h]; Concrete [212]; Excavation [1] | 29,262.36 | STR |  |  |  |  |  |
| BL1-ST-1F-1040 |  | FW for Slab | 8d | 2014-09-08 | 2014-09-16 | BL1-ST-1F-1030 | 57.5d | 0d | MNHRS [8974.17 h]; Cash Flow [39454.4 h]; FW [1267]; Excavation [8] | 39,454.38 | STR |  |  |  |  |  |
| BL1-ST-1F-1050 |  | Reinforcement for Slab | 8d | 2014-09-17 | 2014-09-25 | BL1-ST-1F-1040 | 57.5d | 0d | MNHRS [1189.26 h]; Cash Flow [79511.8 h]; Reinforcement [63104.5]; Excavation [8] | 79,511.76 | STR |  |  |  |  |  |
| BL1-ST-1F-1060 |  | MEP Works in Slab & Beams | 5d | 2014-09-21 | 2014-09-25 | ENGMEP8640, BL1-ST-1F-1050 FF | 57.5d | 0d | Cash Flow [3349.02 h]; Electrician [320 h]; Excavation [5] | 3,349.02 |  | MEP | EL | B.W |  |  |
| BL1-ST-1F-1070 |  | Concrete for Slab | 1d | 2014-09-27 | 2014-09-27 | BL1-ST-1F-1050, BL1-ST-1F-1060 | 57.5d | 0d | MNHRS [2968.43 h]; Cash Flow [49828.8 h]; Concrete [361]; Excavation [1] | 49,828.83 | STR |  |  |  |  |  |
|  | 2 | **Fiishing** |  | 2014-12-13 | 2015-06-29 |  |  |  |  |  |  |  |  |  |  |  |
| BL1-FN-1F-1000 |  | Block Works | 20d | 2014-12-13 | 2015-01-06 | BL1-ST-2F-1070 FS+12d, BL1-ST-3F-1070 | 136d | 0d | Cash Flow [26434.9 h]; MNHRS [1988 h]; BW [519]; Excavation [20] | 26,434.94 |  |  |  |  | FIN |  |
| BL1-FN-1F-1010 |  | Plaster | 15d | 2015-01-21 | 2015-02-07 | BL1-FN-1F-1000, BL1-MEP-EL-1F-1000, BL1-MEP-EL-1F-1010, BL1-MEP-PL-1F-1000, BL1-MEP-PL-1F-1010 | 136d | 0d | MNHRS [2245.5 h]; Cash Flow [26392 h]; Plaster [749]; Excavation [15] | 26,392.04 |  |  |  |  | FIN |  |
| BL1-FN-1F-1020 |  | Paint 1st Coat | 15d | 2015-02-08 | 2015-02-24 | BL1-FN-1F-1010 | 145d | 0d | MNHRS [674 h]; Cash Flow [4064.48 h]; Painting [749]; Excavation [15] | 4,064.48 |  |  |  |  | FIN |  |
| BL1-FN-1F-1030 |  | Ceiling Paint | 10d | 2015-02-19 | 2015-03-02 | BL1-FN-1F-1020 SS+10d | 145d | 0d | MNHRS [26.6 h]; Cash Flow [160.32 h]; Painting [30]; Excavation [10] | 160.32 |  |  |  |  | FIN |  |
| BL1-FN-1F-1040 |  | Waterproofing | 5d | 2015-03-03 | 2015-03-08 | BL1-FN-1F-1030 | 145d | 0d | MNHRS [6.9 h]; Cash Flow [131.19 h]; Waterproofing [23]; Excavation [5] | 131.19 |  |  |  |  | FIN |  |
| BL1-FN-1F-1050 |  | Wall Tiling | 10d | 2015-03-03 | 2015-03-14 | BL1-FN-1F-1030 | 163d | 18d | MNHRS [1184 h]; Cash Flow [5254.47 h]; Tiling [118.4]; Excavation [10] | 5,254.47 |  |  |  |  | FIN |  |
| BL1-FN-1F-1060 |  | Flooring Works | 20d | 2015-03-09 | 2015-03-31 | BL1-FN-1F-1040 | 145d | 0d | MNHRS [1346 h]; Cash Flow [31373.1 h]; Tiling [205]; Excavation [20] | 31,373.06 |  |  |  |  | FIN |  |
| BL1-FN-1F-1070 |  | False Ceiling | 15d | 2015-04-05 | 2015-04-21 | BL1-FN-1F-1050, BL1-MEP-AC-1F-2070 FF+6d, BL1-MEP-PL-1F-2020 FF+6d, BL1-MEP-PL-1F-2040 FF+6d, BL1-MEP-AC-1F-2040 FF+6d, BL1-MEP-EL-1F-2040 FF+6d, BL1-MEP-EL-1F-2050 FF+6d, BL1-MEP-EL-1F-2020 FF+6d, BL1-MEP-EL-1F-2060 FF+6d, BL1-MEP-EL-1F-2000 FF+6d, BL1-MEP-EL-1F-2070 FF+6d | 145d | 0d | Cash Flow [39059.6 h]; False Ceiling [931]; MNHRS [4655 h]; Excavation [15] | 39,059.57 |  |  |  |  | FIN |  |
| BL1-FN-1F-1080 |  | Hand Rails for Stairs | 15d | 2015-04-22 | 2015-05-09 | BL1-FN-1F-1070 | 145d | 5d | Cash Flow [9483.79 h]; Metal Works & Handrail [20]; MNHRS [43 h]; Excavation [15] | 9,483.79 |  |  |  |  | FIN |  |
| BL1-FN-1F-1090 |  | Doors Installation | 15d | 2015-05-16 | 2015-06-01 | BL1-FN-1F-1080, BL1-FN-GF-1090 | 140d | 0d | Cash Flow [31765.1 h]; Excavation [15] | 31,765.06 |  |  |  |  | FIN |  |
| BL1-FN-1F-1100 |  | Final Paint | 10d | 2015-06-20 | 2015-06-29 | BL1-FN-1F-1060, BL1-MEP-AC-1F-3000 FF+4d, BL1-MEP-EL-1F-3000 FF+4d, BL1-MEP-EL-1F-3010 FF+4d, BL1-MEP-EL-1F-3020 FF+4d, BL1-MEP-EL-1F-3040 FF+4d, BL1-MEP-EL-1F-3050 FF+4d, BL1-MEP-EL-1F-3070 FF+4d, BL1-MEP-PL-1F-3000 FF+4d, BL1-MEP-PL-1F-3010 FF+4d, BL1-MEP-EL-1F-3030 FF+4d | 229d | 15d | Excavation [10] |  |  |  |  |  | FIN |  |
|  | 5 | **MEP Work** |  | 2014-12-25 | 2015-07-14 |  |  |  |  |  |  |  |  |  |  |  |
|  | 1 | **Mechanical System** |  | 2015-01-07 | 2015-07-14 |  |  |  |  |  |  |  |  |  |  |  |
|  | 2 | **HVAC Works** |  | 2015-01-07 | 2015-06-17 |  |  |  |  |  |  |  |  |  |  |  |
|  | 1 | **1st Fix** |  | 2015-01-07 | 2015-01-20 |  |  |  |  |  |  |  |  |  |  |  |
| BL1-MEP-AC-1F-1000 |  | Supports and Hungers Fixing | 12d | 2015-01-07 | 2015-01-20 | BL1-MEP-AC-GF-1000, OFF-ENG-MEP-AC1160, BL1-FN-1F-1000 | 151d | 12d | Cash Flow [326.47 h]; Ductman [192 h]; Excavation [12] | 326.47 |  | MEP | AC | 1st Fix |  | 1f |

| ID | WBS | Activity | Duration | Start | Finish | Predecessors | Total float | Free float | Resources | Cost | Responsibility | MEP Systems | MEP Steps | Fix |
| --- | --- | --- | --- | --- | --- | --- | --- | --- | --- | --- | --- | --- | --- | --- |
|  | 3 | **2nd Fix** |  | 2015-02-08 | 2015-04-01 |  |  |  |  |  |  |  |  |  |
| BL1-MEP-AC-1F-2000 |  | Chilled Water Pipes and Fittings Installation | 21d | 2015-02-08 | 2015-03-03 | BL1-MEP-AC-1F-1000, BL1-MEP-AC-GF-2000, BL1-FN-1F-1010 | 136d | 0d | Cash Flow [5230.19 h]; Pipe Fitter - CHW [840 h]; Excavation [21] | 5,230.19 | MEP | AC | 2nd Fix | 2f |
| BL1-MEP-AC-1F-2010 |  | Duct Installation and Insulation | 21d | 2015-02-21 | 2015-03-16 | BL1-MEP-AC-1F-1000, BL1-MEP-AC-GF-2010, BL1-FN-1F-1010 | 126d | 0d | Cash Flow [4329.94 h]; Ductman [263 h]; Excavation [21] | 4,329.94 | MEP | AC | 2nd Fix | 2f |
| BL1-MEP-AC-1F-2050 |  | FCU's Installation | 8d | 2015-02-26 | 2015-03-07 | BL1-MEP-AC-1F-1000, BL1-MEP-AC-GF-2050, BL1-FN-1F-1010 | 169d | 3d | Cash Flow [5992.06 h]; Pipe Fitter - CHW [192 h]; Excavation [8] | 5,992.06 | MEP | AC | 2nd Fix | 2f |
| BL1-MEP-AC-1F-2020 |  | Chilled Water Pipes Pressure Test | 6d | 2015-03-04 | 2015-03-10 | BL1-MEP-AC-1F-2000 | 166d | 0d | Cash Flow [581.12 h]; Pipe Fitter - CHW [96 h]; Excavation [6] | 581.12 | MEP | AC | 2nd Fix | 2f |
| BL1-MEP-AC-1F-2030 |  | Chilled Water Pipes Insulation | 12d | 2015-03-11 | 2015-03-24 | BL1-MEP-AC-1F-2020, BL1-MEP-AC-GF-2030 | 241d | 15d | Cash Flow [1658.21 h]; Pipe Fitter - CHW [384 h]; Excavation [12] | 1,658.21 | MEP | AC | 2nd Fix | 2f |
| BL1-MEP-AC-1F-2060 |  | Valve Package Installation | 6d | 2015-03-11 | 2015-03-17 | BL1-MEP-AC-1F-2050, BL1-MEP-AC-1F-2020 | 166d | 0d | Cash Flow [2380.49 h]; Pipe Fitter - CHW [96 h]; Excavation [6] | 2,380.49 | MEP | AC | 2nd Fix | 2f |
| BL1-MEP-AC-1F-2040 |  | Duct Accessories Installation | 14d | 2015-03-17 | 2015-04-01 | BL1-MEP-AC-1F-2010, BL1-MEP-AC-GF-2040 | 156d | 7d | Cash Flow [652.97 h]; Pipe Fitter - CHW [448 h]; Excavation [14] | 652.97 | MEP | AC | 2nd Fix | 2f |
| BL1-MEP-AC-1F-2070 |  | FCU's Drain Pipes Installation | 3d | 2015-03-18 | 2015-03-21 | BL1-MEP-AC-1F-2050, BL1-MEP-AC-1F-2060, BL1-MEP-AC-GF-2070 | 166d | 21d | Cash Flow [516.93 h]; Pipe Fitter - CHW [48 h]; Excavation [3] | 516.93 | MEP | AC | 2nd Fix | 2f |
|  | 4 | **Final Fix** |  | 2015-06-06 | 2015-06-17 |  |  |  |  |  |  |  |  |  |
| BL1-MEP-AC-1F-3000 |  | Grills and Diffusers Fixing | 12d | 2015-06-06 | 2015-06-17 | BL1-MEP-AC-1F-2040, BL1-MEP-AC-1F-2010, BL1-MEP-AC-GF-3000, BL1-FN-1F-1070 | 184d | 0d | Cash Flow [11538.6 h]; Ductman [384 h]; Excavation [12] | 11,538.61 | MEP | AC | Final F | ff |
|  | 1 | **Plumbing and Drainage Works** |  | 2015-01-07 | 2015-06-21 |  |  |  |  |  |  |  |  |  |
|  | 1 | **1st Fix** |  | 2015-01-07 | 2015-01-20 |  |  |  |  |  |  |  |  |  |
| BL1-MEP-PL-1F-1000 |  | Low Level Water Supply Pipes Installation | 12d | 2015-01-07 | 2015-01-20 | BL1-MEP-PL-GF-1000, OFF-ENG-MEP-WS1120, BL1-FN-1F-1000 | 136d | 0d | Cash Flow [713.22 h]; Plumber [42 h]; Excavation [12] | 713.22 | MEP | PL & D | 1st Fix | 1f |
| BL1-MEP-PL-1F-1010 |  | Low Level Drainage Pipes Installation | 12d | 2015-01-07 | 2015-01-20 | BL1-MEP-PL-GF-1010, OFF-ENG-MEP-DR1130, BL1-FN-1F-1000 | 136d | 0d | Cash Flow [2279.46 h]; Plumber [12.67 h]; Excavation [12] | 2,279.46 | MEP | PL & D | 1st Fix | 1f |
| BL1-MEP-PL-1F-1020 |  | Supports installation for High level Pipes | 12d | 2015-01-07 | 2015-01-20 | BL1-MEP-PL-GF-1020, OFF-ENG-MEP-DR1130, OFF-ENG-MEP-WS1120, BL1-FN-1F-1000 | 160d | 12d | Cash Flow [819.68 h]; Plumber [16.35 h]; Excavation [12] | 819.68 | MEP | PL & D | 1st Fix | 1f |
|  | 3 | **2nd Fix** |  | 2015-02-08 | 2015-04-14 |  |  |  |  |  |  |  |  |  |
| BL1-MEP-PL-1F-2000 |  | High Level Drainage Pipes Installation | 21d | 2015-02-08 | 2015-03-03 | BL1-MEP-PL-1F-1020, BL1-MEP-PL-1F-1010, BL1-FN-1F-1010, BL1-MEP-PL-GF-2000 | 145d | 6d | Cash Flow [6562.53 h]; Plumber [244.38 h]; Excavation [21] | 6,562.53 | MEP | PL & D | 2nd Fix | 2f |
| BL1-MEP-PL-1F-2030 |  | High Level Water Supply Pipes and Fittings Installation | 21d | 2015-02-08 | 2015-03-03 | BL1-MEP-PL-1F-1020, BL1-MEP-PL-1F-1000, BL1-MEP-PL-GF-2020, BL1-FN-1F-1010 | 145d | 0d | Cash Flow [1308.6 h]; Plumber [150.02 h]; Excavation [21] | 1,308.6 | MEP | PL & D | 2nd Fix | 2f |
| BL1-MEP-PL-1F-2040 |  | Water Supply Pipes Pressure Test | 6d | 2015-03-04 | 2015-03-10 | BL1-MEP-PL-1F-2030, BL1-MEP-PL-1F-1000, BL1-MEP-PL-GF-2040 | 175d | 21d | Cash Flow [145.74 h]; Plumber [48 h]; Excavation [6] | 145.74 | MEP | PL & D | 2nd Fix | 2f |
| BL1-MEP-PL-1F-2010 |  | Floor Drain Installation | 6d | 2015-04-01 | 2015-04-07 | BL1-MEP-PL-GF-2010, OFF-ENG-MEP-DR1130, OFF-PRO-MEP-DR1080, BL1-FN-1F-1060 | 145d | 0d | Cash Flow [548.14 h]; Plumber [6 h]; Excavation [6] | 548.14 | MEP | PL & D | 1st Fix | 2f |
| BL1-MEP-PL-1F-2020 |  | Drainage Pipes Gravity Test | 6d | 2015-04-08 | 2015-04-14 | BL1-MEP-PL-1F-2000, BL1-MEP-PL-1F-1010, BL1-MEP-PL-1F-2010, BL1-MEP-PL-GF-2030 | 145d | 0d | Cash Flow [820.24 h]; Plumber [48 h]; Excavation [6] | 820.24 | MEP | PL & D | 2nd Fix | 2f |
|  | 4 | **Final Fix** |  | 2015-06-02 | 2015-06-21 |  |  |  |  |  |  |  |  |  |
| BL1-MEP-PL-1F-3000 |  | Sanitary Ware Installation Including Connection | 14d | 2015-06-02 | 2015-06-15 | BL1-MEP-PL-1F-2040, BL1-MEP-PL-1F-2020, BL1-MEP-PL-GF-3000, BL1-FN-1F-1050, BL1-FN-1F-1060, BL1-FN-1F-1070, BL1-FN-1F-1090 | 145d | 0d | Cash Flow [4439.52 h]; Plumber [383.86 h]; Excavation [14] | 4,439.52 | MEP | PL & D | Final F | ff |
| BL1-MEP-PL-1F-3010 |  | Sanitary Ware Accessories Installation | 6d | 2015-06-16 | 2015-06-21 | BL1-MEP-PL-1F-3000, BL1-MEP-PL-GF-3010 | 185d | 4d | Cash Flow [160.22 h]; Plumber [36.45 h]; Excavation [6] | 160.22 | MEP | PL & D | Final F | ff |

| ID | WBS | Activity | Duration | Start | Finish | Predecessors | Total float | Free float | Resources | Cost | Responsibility | MEP Systems | MEP Steps | Fix |
| --- | --- | --- | --- | --- | --- | --- | --- | --- | --- | --- | --- | --- | --- | --- |
|  | 3 | **Fire Fighting Works** |  | 2015-07-06 | 2015-07-14 |  |  |  |  |  |  |  |  |  |
|  | 4 | **Final Fix** |  | 2015-07-06 | 2015-07-14 |  |  |  |  |  |  |  |  |  |
| BL1-MEP-FF-1F-3000 |  | Fire Extinguisher Installation | 2d | 2015-07-06 | 2015-07-07 | BL1-MEP-FF-GF-3000, OFF-ENG-MEP-FF1120, BL1-FN-1F-1050, BL1-FN-1F-1100 SS+1d | 214d | 8d | Cash Flow [1074.99 h]; Plumber [8 h]; Excavation [2] | 1,074.99 | MEP | FF | Final F | ff |
| BL1-MEP-FF-1F-3010 |  | Hose reel Cabinet Installation and Connection | 6d | 2015-07-09 | 2015-07-14 | BL1-MEP-FF-GF-3010, OFF-ENG-MEP-FF1120, BL1-FN-1F-1050, BL1-FN-1F-1070 | 187d | 0d | Cash Flow [1330.85 h]; Plumber [192 h]; Excavation [6] | 1,330.85 | MEP | FF | Final F | ff |
|  | 3 | **Electrical System** |  | 2014-12-25 | 2015-06-25 |  |  |  |  |  |  |  |  |  |
|  | 1 | **1st Fix** |  | 2014-12-25 | 2015-01-13 |  |  |  |  |  |  |  |  |  |
| BL1-MEP-EL-1F-1000 |  | PVC Back Boxes and Conduits Fixing in Wall | 12d | 2014-12-25 | 2015-01-10 | ENGMEP9640, ENGMEP9500, ENGMEP9220, ENGMEP9060, ENGMEP8840, ENGMEP8640, PROCMEPELE1990, PROCMEPELE2080, BL1-FN-1F-1000 SS+3d, BL1-FN-1F-1000 FF+3d, BL1-MEP-EL-GF-1000 | 142d | 9d | Cash Flow [3307.67 h]; Electrician [384 h]; Excavation [12] | 3,307.67 | MEP | EL | 1st Fix | 1f |
| BL1-MEP-EL-1F-1010 |  | DB's Inclosure Fixing | 6d | 2015-01-07 | 2015-01-13 | ENGMEP8840, ENGMEP8640, BL1-FN-1F-1000, BL1-MEP-EL-GF-1010 | 142d | 6d | Cash Flow [2130.4 h]; Electrician [96 h]; Excavation [6] | 2,130.4 | MEP | EL | 1st Fix | 1f |
|  | 2 | **2nd Fix** |  | 2015-02-08 | 2015-03-30 |  |  |  |  |  |  |  |  |  |
| BL1-MEP-EL-1F-2000 |  | Fire Alarm System Wiring | 12d | 2015-02-08 | 2015-02-21 | BL1-MEP-EL-1F-1000, PROCMEPELE8650, BL1-FN-1F-1010, BL1-MEP-EL-GF-2000 | 190d | 15d | Cash Flow [7111.01 h]; Electrician [192 h]; Excavation [12] | 7,111.01 | MEP | EL | 2nd Fix | 2f |
| BL1-MEP-EL-1F-2010 |  | Low Current System Wiring | 14d | 2015-02-08 | 2015-02-23 | BL1-MEP-EL-1F-1000, BL1-FN-1F-1010 | 253d | 49d | Cash Flow [38217.8 h]; Electrician [244 h]; Excavation [14] | 38,217.78 | MEP | EL |  | 2f |
| BL1-MEP-EL-1F-2020 |  | Cable Tray and Trunking Installation | 14d | 2015-02-08 | 2015-02-23 | PROCMEPELE3340, BL1-MEP-EL-GF-2010, BL1-FN-1F-1010 | 188d | 13d | Cash Flow [9064.45 h]; Electrician [336 h]; Excavation [14] | 9,064.45 | MEP | EL | 2nd Fix | 2f |
| BL1-MEP-EL-1F-2040 |  | Lighting Wiring | 12d | 2015-02-08 | 2015-02-21 | BL1-MEP-EL-1F-1000, PROCMEPELE5680, BL1-FN-1F-1010, BL1-MEP-EL-GF-2040 | 190d | 15d | Cash Flow [3566.08 h]; Electrician [241.71 h]; Excavation [12] | 3,566.08 | MEP | EL | 2nd Fix | 2f |
| BL1-MEP-EL-1F-2050 |  | Power Points Wiring | 12d | 2015-02-08 | 2015-02-21 | BL1-MEP-EL-1F-1000, PROCMEPELE5680, BL1-FN-1F-1010, BL1-MEP-EL-GF-2050 | 178d | 3d | Cash Flow [2894.21 h]; Electrician [192 h]; Excavation [12] | 2,894.21 | MEP | EL | 2nd Fix | 2f |
| BL1-MEP-EL-1F-2060 |  | Emergency Light Wiring | 8d | 2015-02-08 | 2015-02-16 | BL1-MEP-EL-1F-1000, PROCMEPELE9330, BL1-FN-1F-1010, BL1-MEP-EL-GF-2070 | 194d | 19d | Cash Flow [1202.03 h]; Electrician [128 h]; Excavation [8] | 1,202.03 | MEP | EL | 2nd Fix | 2f |
| BL1-MEP-EL-1F-2070 |  | DB's Installation and Termination | 12d | 2015-02-25 | 2015-03-10 | BL1-MEP-EL-1F-1010, PROCMEPELE8920, BL1-MEP-EL-1F-2050, BL1-MEP-EL-GF-2080, BL1-FN-1F-1020 | 175d | 0d | Cash Flow [4970.93 h]; Electrician [288 h]; Excavation [12] | 4,970.93 | MEP | EL | 2nd Fix | 2f |
| BL1-MEP-EL-1F-3060 |  | Power Cable Puling | 14d | 2015-03-11 | 2015-03-26 | BL1-MEP-EL-1F-2020, BL1-MEP-EL-1F-2040, BL1-MEP-EL-1F-2050, BL1-MEP-EL-GF-3060, BL1-MEP-EL-1F-2070 | 204d | 13d | Cash Flow [6361.76 h]; Electrician [168 h]; Excavation [14] | 6,361.76 | MEP | EL | 2nd Fix | 2f |
| BL1-MEP-EL-1F-2030 |  | SMDB's Installation | 6d | 2015-03-24 | 2015-03-30 | BL1-MEP-EL-1F-1000, BL1-FN-1F-1020, BL1-MEP-EL-GF-2030 | 264d | 0d | Cash Flow [4196.6 h]; Electrician [45 h]; Excavation [6] | 4,196.6 | MEP | EL | 2nd Fix | 2f |
|  | 3 | **Final Fix** |  | 2015-04-22 | 2015-06-25 |  |  |  |  |  |  |  |  |  |
| BL1-MEP-EL-1F-3010 |  | Emergency Light Fixing | 8d | 2015-04-22 | 2015-04-30 | BL1-MEP-EL-1F-2060, BL1-FN-1F-1070, BL1-MEP-EL-GF-3010 | 250d | 19d | Cash Flow [5714.02 h]; Electrician [128 h]; Excavation [8] | 5,714.02 | MEP | EL | Final F | ff |
| BL1-MEP-EL-1F-3020 |  | Fire Alarm System Detector Installation | 12d | 2015-04-22 | 2015-05-05 | BL1-MEP-EL-1F-2000, BL1-FN-1F-1070, BL1-MEP-EL-GF-3020 | 214d | 15d | Cash Flow [4034.38 h]; Electrician [192 h]; Excavation [12] | 4,034.38 | MEP | EL | Final F | ff |
| BL1-MEP-EL-1F-3030 |  | Despature for Low Current System Installation | 14d | 2015-04-22 | 2015-05-07 | BL1-MEP-EL-1F-2010, BL1-MEP-EL-GF-3030, BL1-FN-1F-1020, BL1-FN-1F-1070 | 204d | 0d | Cash Flow [72738.2 h]; Electrician [336 h]; Excavation [14] | 72,738.16 | MEP | EL |  | ff |
| BL1-MEP-EL-1F-3070 |  | SMDB's Termination and Final Connection | 6d | 2015-04-22 | 2015-04-28 | BL1-MEP-EL-1F-2030, BL1-MEP-EL-GF-3070, BL1-MEP-EL-1F-3060, BL1-FN-1F-1070 | 245d | 21d | Cash Flow [2785.83 h]; Electrician [192 h]; Excavation [6] | 2,785.82 | MEP | EL | Final F | ff |
| BL1-MEP-EL-1F-3050 |  | Sockets and Switches Fixing | 8d | 2015-04-23 | 2015-05-02 | BL1-MEP-EL-1F-2050, PROCMEPELE8830, BL1-FN-1F-1070, BL1-MEP-EL-GF-3050 | 241d | 18d | Cash Flow [1166.96 h]; Electrician [128 h]; Excavation [8] | 1,166.96 | MEP | EL | Final F | ff |
| BL1-MEP-EL-1F-3040 |  | Low Current System Outlet installation and Connection | 10d | 2015-05-09 | 2015-05-19 | BL1-MEP-EL-1F-2010, BL1-MEP-EL-1F-3030 | 264d | 35d | Cash Flow [3860.79 h]; Electrician [80 h]; Excavation [10] | 3,860.79 | MEP | EL |  | ff |
| BL1-MEP-EL-1F-3000 |  | Lights Fitting Fixing | 14d | 2015-06-12 | 2015-06-25 | BL1-MEP-EL-1F-2040, PROCMEPELE8560, BL1-FN-1F-1070, BL1-MEP-EL-GF-3000 | 155d | 0d | Cash Flow [7322.66 h]; Electrician [244 h]; Excavation [14] | 7,322.66 | MEP | EL | Final F | ff |

| ID | WBS | Activity | Duration | Start | Finish | Predecessors | Total float | Free float | Resources | Cost | Structural | Responsibility | MEP Systems | MEP Steps | Finishing | Fix |
| --- | --- | --- | --- | --- | --- | --- | --- | --- | --- | --- | --- | --- | --- | --- | --- | --- |
|  | 5 | **2nd Floor** |  | 2014-09-28 | 2015-07-24 |  |  |  |  |  |  |  |  |  |  |  |
|  | 1 | **Structural** |  | 2014-09-28 | 2014-11-13 |  |  |  |  |  |  |  |  |  |  |  |
| BL1-ST-2F-1000 |  | Reinforcement for Verticals | 10d | 2014-09-28 | 2014-10-13 | ENG-STR-BL1-APP180, ENG-STR-BL1-APP190, BL1-ST-1F-1070 | 57.5d | 0d | MNHRS [644.34 h]; Cash Flow [43079.3 h]; Reinforcement [34189.9]; Excavation [10] | 43,079.3 | STR |  |  |  |  |  |
| BL1-ST-2F-1010 |  | MEP Works in Vertical Element | 5d | 2014-10-04 | 2014-10-13 | ENGMEP8640, BL1-ST-2F-1000 FF | 63.5d | 6d | Cash Flow [1798.55 h]; Electrician [160 h]; Excavation [5] | 1,798.55 |  | MEP | EL | B.W |  |  |
| BL1-ST-2F-1020 |  | FW for Verticals | 6d | 2014-10-14 | 2014-10-20 | BL1-ST-2F-1000 | 57.5d | 0d | MNHRS [8393.36 h]; Cash Flow [36900.9 h]; FW [1185]; Excavation [6] | 36,900.9 | STR |  |  |  |  |  |
| BL1-ST-2F-1030 |  | Concrete Verticals | 1d | 2014-10-21 | 2014-10-21 | BL1-ST-2F-1020, BL1-ST-2F-1010 | 57.5d | 0d | MNHRS [1619.89 h]; Cash Flow [27191.9 h]; Concrete [197]; Excavation [1] | 27,191.91 | STR |  |  |  |  |  |
| BL1-ST-2F-1040 |  | FW for Slab | 8d | 2014-10-22 | 2014-11-02 | BL1-ST-2F-1030 | 57.5d | 0d | MNHRS [9845.38 h]; Cash Flow [43284.6 h]; FW [1390]; Excavation [8] | 43,284.6 | STR |  |  |  |  |  |
| BL1-ST-2F-1050 |  | Reinforcement for Slab | 8d | 2014-11-04 | 2014-11-12 | BL1-ST-2F-1040 | 57.5d | 0d | MNHRS [1189.26 h]; Cash Flow [79511.8 h]; Reinforcement [63104.5]; Excavation [8] | 79,511.76 | STR |  |  |  |  |  |
| BL1-ST-2F-1060 |  | MEP Works in Slab & Beams | 5d | 2014-11-08 | 2014-11-12 | ENGMEP8640, BL1-ST-2F-1050 FF | 57.5d | 0d | Cash Flow [3349.02 h]; Electrician [320 h]; Excavation [5] | 3,349.02 |  | MEP | EL | B.W |  |  |
| BL1-ST-2F-1070 |  | Concrete for Slab | 1d | 2014-11-13 | 2014-11-13 | BL1-ST-2F-1050, BL1-ST-2F-1060 | 57.5d | 0d | MNHRS [3157.56 h]; Cash Flow [53003.5 h]; Concrete [384]; Excavation [1] | 53,003.52 | STR |  |  |  |  |  |
|  | 2 | **Fiishing** |  | 2015-01-12 | 2015-07-24 |  |  |  |  |  |  |  |  |  |  |  |
| BL1-FN-2F-1000 |  | Block Works | 20d | 2015-01-12 | 2015-02-03 | BL1-ST-3F-1070 FS+12d, BL1-ST-4F-1070 | 130d | 0d | Cash Flow [26434.9 h]; MNHRS [1988 h]; BW [519]; Excavation [20] | 26,434.94 |  |  |  |  | FIN |  |
| BL1-FN-2F-1010 |  | Plaster | 18d | 2015-02-18 | 2015-03-10 | BL1-FN-2F-1000, BL1-MEP-PL-2F-1000, BL1-MEP-PL-2F-1010 | 130d | 0d | MNHRS [2245.5 h]; Cash Flow [26392 h]; Plaster [749]; Excavation [18] | 26,392.04 |  |  |  |  | FIN |  |
| BL1-FN-2F-1020 |  | Paint 1st Coat | 15d | 2015-03-11 | 2015-03-28 | BL1-FN-2F-1010 | 133d | 0d | MNHRS [674 h]; Cash Flow [4064.48 h]; Painting [749]; Excavation [15] | 4,064.48 |  |  |  |  | FIN |  |
| BL1-FN-2F-1030 |  | Ceiling Paint | 10d | 2015-03-23 | 2015-04-02 | BL1-FN-2F-1020 SS+10d | 133d | 0d | MNHRS [26.6 h]; Cash Flow [160.32 h]; Painting [30]; Excavation [10] | 160.32 |  |  |  |  | FIN |  |
| BL1-FN-2F-1040 |  | Waterproofing | 5d | 2015-04-04 | 2015-04-08 | BL1-FN-2F-1030 | 133d | 0d | MNHRS [6.9 h]; Cash Flow [131.19 h]; Waterproofing [23]; Excavation [5] | 131.19 |  |  |  |  | FIN |  |
| BL1-FN-2F-1050 |  | Wall Tiling | 10d | 2015-04-04 | 2015-04-14 | BL1-FN-2F-1030 | 151d | 18d | MNHRS [2368 h]; Cash Flow [10509 h]; Tiling [236]; Excavation [10] | 10,509 |  |  |  |  | FIN |  |
| BL1-FN-2F-1060 |  | Flooring Works | 20d | 2015-04-09 | 2015-05-02 | BL1-FN-2F-1040 | 133d | 0d | MNHRS [1346 h]; Cash Flow [31373.1 h]; Tiling [205]; Excavation [20] | 31,373.06 |  |  |  |  | FIN |  |
| BL1-FN-2F-1070 |  | False Ceiling | 15d | 2015-05-06 | 2015-05-23 | BL1-FN-2F-1050, BL1-MEP-AC-2F-2070 FF+6d, BL1-MEP-PL-2F-2030 FF+6d, BL1-MEP-PL-2F-2040 FF+6d, BL1-MEP-AC-2F-2040 FF+6d, BL1-MEP-EL-2F-2040 FF+6d, BL1-MEP-EL-2F-2050 FF+6d, BL1-MEP-EL-2F-2000 FF+6d, BL1-MEP-EL-2F-2060 FF+6d, BL1-MEP-EL-2F-2010 FF+6d, BL1-MEP-EL-2F-2070 FF+6d | 133d | 0d | Cash Flow [39059.6 h]; False Ceiling [931]; MNHRS [4655 h]; Excavation [15] | 39,059.57 |  |  |  |  | FIN |  |
| BL1-FN-2F-1080 |  | Hand Rails for Stairs | 15d | 2015-05-24 | 2015-06-08 | BL1-FN-2F-1070 | 133d | 0d | Cash Flow [9483.79 h]; Metal Works & Handrail [20]; MNHRS [43 h]; Excavation [15] | 9,483.79 |  |  |  |  | FIN |  |
| BL1-FN-2F-1090 |  | Doors Installation | 15d | 2015-06-09 | 2015-06-23 | BL1-FN-2F-1080, BL1-FN-1F-1090 | 133d | 0d | Cash Flow [31765.1 h]; Excavation [15] | 31,765.06 |  |  |  |  | FIN |  |
| BL1-FN-2F-1100 |  | Final Paint | 10d | 2015-07-15 | 2015-07-24 | BL1-FN-2F-1060, BL1-MEP-AC-2F-3000 FF+4d, BL1-MEP-EL-2F-3040 FF+4d, BL1-MEP-EL-2F-3010 FF+4d, BL1-MEP-EL-2F-3000 FF+4d, BL1-MEP-EL-2F-3020 FF+4d, BL1-MEP-EL-2F-3050 FF+4d, BL1-MEP-PL-2F-3000 FF+4d, BL1-MEP-PL-2F-3010 FF+4d, BL1-MEP-FF-2F-3010 FF+4d, BL1-MEP-EL-2F-3070 FF+4d, BL1-MEP-EL-2F-3030 FF+4d | 206d | 0d | Excavation [10] |  |  |  |  |  | FIN |  |
|  | 6 | **MEP Work** |  | 2015-01-25 | 2015-07-20 |  |  |  |  |  |  |  |  |  |  |  |
|  | 1 | **Mechanical System** |  | 2015-02-04 | 2015-07-20 |  |  |  |  |  |  |  |  |  |  |  |
|  | 2 | **HVAC Works** |  | 2015-02-04 | 2015-06-29 |  |  |  |  |  |  |  |  |  |  |  |
|  | 1 | **1st Fix** |  | 2015-02-04 | 2015-02-17 |  |  |  |  |  |  |  |  |  |  |  |
| BL1-MEP-AC-2F-1000 |  | Supports and Hungers Fixing | 12d | 2015-02-04 | 2015-02-17 | BL1-MEP-AC-1F-1000, BL1-FN-2F-1000 | 148d | 12d | Cash Flow [326.47 h]; Ductman [192 h]; Excavation [12] | 326.47 |  | MEP | AC | 1st Fix |  | 1f |

| ID | WBS | Activity | Duration | Start | Finish | Predecessors | Total float | Free float | Resources | Cost | Responsibility | MEP Systems | MEP Steps | Fix |
| --- | --- | --- | --- | --- | --- | --- | --- | --- | --- | --- | --- | --- | --- | --- |
|  | 3 | **2nd Fix** |  | 2015-03-11 | 2015-04-26 |  |  |  |  |  |  |  |  |  |
| BL1-MEP-AC-2F-2000 |  | Chilled Water Pipes and Fittings Installation | 21d | 2015-03-11 | 2015-04-04 | BL1-MEP-AC-2F-1000, BL1-MEP-AC-1F-2000, BL1-FN-2F-1010 | 130d | 0d | Cash Flow [5230.19 h]; Pipe Fitter - CHW [840 h]; Excavation [21] | 5,230.19 | MEP | AC | 2nd Fix | 2f |
| BL1-MEP-AC-2F-2050 |  | FCU's Installation | 8d | 2015-03-11 | 2015-03-19 | BL1-MEP-AC-2F-1000, BL1-MEP-AC-1F-2050, BL1-FN-2F-1010 | 173d | 16d | Cash Flow [5992.06 h]; Pipe Fitter - CHW [192 h]; Excavation [8] | 5,992.06 | MEP | AC | 2nd Fix | 2f |
| BL1-MEP-AC-2F-2010 |  | Duct Installation and Insulation | 21d | 2015-03-17 | 2015-04-09 | BL1-MEP-AC-2F-1000, BL1-MEP-AC-1F-2010, BL1-FN-2F-1010 | 126d | 0d | Cash Flow [4329.94 h]; Ductman [263 h]; Excavation [21] | 4,329.94 | MEP | AC | 2nd Fix | 2f |
| BL1-MEP-AC-2F-2020 |  | Chilled Water Pipes Pressure Test | 6d | 2015-04-05 | 2015-04-11 | BL1-MEP-AC-2F-2000 | 154d | 0d | Cash Flow [581.12 h]; Pipe Fitter - CHW [96 h]; Excavation [6] | 581.12 | MEP | AC | 2nd Fix | 2f |
| BL1-MEP-AC-2F-2040 |  | Duct Accessories Installation | 14d | 2015-04-11 | 2015-04-26 | BL1-MEP-AC-2F-2010, BL1-MEP-AC-1F-2040 | 150d | 7d | Cash Flow [652.97 h]; Pipe Fitter - CHW [448 h]; Excavation [14] | 652.97 | MEP | AC | 2nd Fix | 2f |
| BL1-MEP-AC-2F-2030 |  | Chilled Water Pipes Insulation | 12d | 2015-04-12 | 2015-04-25 | BL1-MEP-AC-2F-2020, BL1-MEP-AC-1F-2030 | 226d | 12d | Cash Flow [1658.21 h]; Pipe Fitter - CHW [384 h]; Excavation [12] | 1,658.21 | MEP | AC | 2nd Fix | 2f |
| BL1-MEP-AC-2F-2060 |  | Valve Package Installation | 6d | 2015-04-12 | 2015-04-18 | BL1-MEP-AC-2F-2050, BL1-MEP-AC-2F-2020 | 154d | 0d | Cash Flow [2380.49 h]; Pipe Fitter - CHW [96 h]; Excavation [6] | 2,380.49 | MEP | AC | 2nd Fix | 2f |
| BL1-MEP-AC-2F-2070 |  | FCU's Drain Pipes Installation | 3d | 2015-04-19 | 2015-04-21 | BL1-MEP-AC-2F-2050, BL1-MEP-AC-2F-2060, BL1-MEP-AC-1F-2070 | 154d | 21d | Cash Flow [516.93 h]; Pipe Fitter - CHW [48 h]; Excavation [3] | 516.93 | MEP | AC | 2nd Fix | 2f |
|  | 4 | **Final Fix** |  | 2015-06-18 | 2015-06-29 |  |  |  |  |  |  |  |  |  |
| BL1-MEP-AC-2F-3000 |  | Grills and Diffusers Fixing | 12d | 2015-06-18 | 2015-06-29 | BL1-MEP-AC-2F-2040, BL1-MEP-AC-1F-3000, BL1-FN-2F-1070 | 184d | 0d | Cash Flow [11538.6 h]; Ductman [384 h]; Excavation [12] | 11,538.61 | MEP | AC | Final F | ff |
|  | 1 | **Plumbing and Drainage Works** |  | 2015-02-04 | 2015-07-13 |  |  |  |  |  |  |  |  |  |
|  | 1 | **1st Fix** |  | 2015-02-04 | 2015-02-17 |  |  |  |  |  |  |  |  |  |
| BL1-MEP-PL-2F-1000 |  | Low Level Water Supply Pipes Installation | 12d | 2015-02-04 | 2015-02-17 | BL1-MEP-PL-1F-1000, BL1-FN-2F-1000 | 130d | 0d | Cash Flow [713.22 h]; Plumber [42 h]; Excavation [12] | 713.22 | MEP | PL & D | 1st Fix | 1f |
| BL1-MEP-PL-2F-1010 |  | Low Level Drainage Pipes Installation | 12d | 2015-02-04 | 2015-02-17 | BL1-MEP-PL-1F-1010, BL1-FN-2F-1000 | 130d | 0d | Cash Flow [2279.46 h]; Plumber [12.67 h]; Excavation [12] | 2,279.46 | MEP | PL & D | 1st Fix | 1f |
| BL1-MEP-PL-2F-1020 |  | Supports installation for High level Pipes | 12d | 2015-02-04 | 2015-02-17 | BL1-MEP-PL-1F-1020, BL1-FN-2F-1000 | 157d | 12d | Cash Flow [819.68 h]; Plumber [16.35 h]; Excavation [12] | 819.68 | MEP | PL & D | 1st Fix | 1f |
|  | 3 | **2nd Fix** |  | 2015-03-11 | 2015-05-16 |  |  |  |  |  |  |  |  |  |
| BL1-MEP-PL-2F-2000 |  | High Level Drainage Pipes Installation | 21d | 2015-03-11 | 2015-04-04 | BL1-MEP-PL-2F-1020, BL1-MEP-PL-2F-1010, BL1-FN-2F-1010, BL1-MEP-PL-1F-2000 | 139d | 3d | Cash Flow [6562.53 h]; Plumber [244.38 h]; Excavation [21] | 6,562.53 | MEP | PL & D | 2nd Fix | 2f |
| BL1-MEP-PL-2F-2020 |  | High Level Water Supply Pipes and Fittings Installation | 21d | 2015-03-11 | 2015-04-04 | BL1-MEP-PL-2F-1020, BL1-MEP-PL-2F-1000, BL1-MEP-PL-1F-2030, BL1-FN-2F-1010 | 139d | 0d | Cash Flow [1308.6 h]; Plumber [150.02 h]; Excavation [21] | 1,308.6 | MEP | PL & D | 2nd Fix | 2f |
| BL1-MEP-PL-2F-2040 |  | Water Supply Pipes Pressure Test | 6d | 2015-04-05 | 2015-04-11 | BL1-MEP-PL-2F-2020, BL1-MEP-PL-2F-1000, BL1-MEP-PL-1F-2040 | 163d | 18d | Cash Flow [145.74 h]; Plumber [48 h]; Excavation [6] | 145.74 | MEP | PL & D | 2nd Fix | 2f |
| BL1-MEP-PL-2F-2010 |  | Floor Drain Installation | 6d | 2015-05-03 | 2015-05-09 | BL1-MEP-PL-1F-2010, BL1-FN-2F-1060 | 133d | 0d | Cash Flow [548.14 h]; Plumber [6 h]; Excavation [6] | 548.14 | MEP | PL & D | 1st Fix | 2f |
| BL1-MEP-PL-2F-2030 |  | Drainage Pipes Gravity Test | 6d | 2015-05-10 | 2015-05-16 | BL1-MEP-PL-2F-2000, BL1-MEP-PL-2F-1010, BL1-MEP-PL-2F-2010, BL1-MEP-PL-1F-2020 | 133d | 0d | Cash Flow [820.24 h]; Plumber [48 h]; Excavation [6] | 820.24 | MEP | PL & D | 2nd Fix | 2f |
|  | 4 | **Final Fix** |  | 2015-06-24 | 2015-07-13 |  |  |  |  |  |  |  |  |  |
| BL1-MEP-PL-2F-3000 |  | Sanitary Ware Installation Including Connection | 14d | 2015-06-24 | 2015-07-07 | BL1-MEP-PL-2F-2040, BL1-MEP-PL-2F-2030, BL1-MEP-PL-1F-3000, BL1-FN-2F-1060, BL1-FN-2F-1050, BL1-FN-2F-1070, BL1-FN-2F-1090 | 137d | 0d | Cash Flow [4439.52 h]; Plumber [383.86 h]; Excavation [14] | 4,439.52 | MEP | PL & D | Final F | ff |
| BL1-MEP-PL-2F-3010 |  | Sanitary Ware Accessories Installation | 6d | 2015-07-08 | 2015-07-13 | BL1-MEP-PL-2F-3000, BL1-MEP-PL-1F-3010 | 169d | 7d | Cash Flow [160.22 h]; Plumber [36.45 h]; Excavation [6] | 160.22 | MEP | PL & D | Final F | ff |

| ID | WBS | Activity | Duration | Start | Finish | Predecessors | Total float | Free float | Resources | Cost | Responsibility | MEP Systems | MEP Steps | Fix |
| --- | --- | --- | --- | --- | --- | --- | --- | --- | --- | --- | --- | --- | --- | --- |
|  | 3 | **Fire Fighting Works** |  | 2015-07-15 | 2015-07-20 |  |  |  |  |  |  |  |  |  |
|  | 4 | **Final Fix** |  | 2015-07-15 | 2015-07-20 |  |  |  |  |  |  |  |  |  |
| BL1-MEP-FF-2F-3010 |  | Hose reel Cabinet Installation and Connection | 6d | 2015-07-15 | 2015-07-20 | BL1-MEP-FF-1F-3010, BL1-FN-2F-1050, BL1-FN-2F-1070 | 187d | 0d | Cash Flow [1330.85 h]; Plumber [192 h]; Excavation [6] | 1,330.85 | MEP | FF | Final F | ff |
| BL1-MEP-FF-2F-3000 |  | Fire Extinguisher Installation | 2d | 2015-07-16 | 2015-07-17 | BL1-MEP-FF-1F-3000, BL1-FN-2F-1050, BL1-FN-2F-1100 SS+1d | 206d | 15d | Cash Flow [1074.99 h]; Plumber [8 h]; Excavation [2] | 1,074.99 | MEP | FF | Final F | ff |
|  | 3 | **Electrical System** |  | 2015-01-25 | 2015-07-09 |  |  |  |  |  |  |  |  |  |
|  | 1 | **1st Fix** |  | 2015-01-25 | 2015-02-10 |  |  |  |  |  |  |  |  |  |
| BL1-MEP-EL-2F-1000 |  | PVC Back Boxes and Conduits Fixing in Wall | 12d | 2015-01-25 | 2015-02-07 | BL1-MEP-EL-1F-1000, BL1-FN-2F-1000 SS+3d, BL1-FN-2F-1000 FF+3d | 130d | 12d | Cash Flow [3307.67 h]; Electrician [384 h]; Excavation [12] | 3,307.67 | MEP | EL | 1st Fix | 1f |
| BL1-MEP-EL-2F-1010 |  | DB's Inclosure Fixing | 6d | 2015-02-04 | 2015-02-10 | BL1-MEP-EL-1F-1010, BL1-FN-2F-1000 | 157d | 18d | Cash Flow [2130.4 h]; Electrician [96 h]; Excavation [6] | 2,130.4 | MEP | EL | 1st Fix | 1f |
|  | 2 | **2nd Fix** |  | 2015-03-11 | 2015-04-27 |  |  |  |  |  |  |  |  |  |
| BL1-MEP-EL-2F-2000 |  | Cable Tray and Trunking Installation | 14d | 2015-03-11 | 2015-03-26 | BL1-MEP-EL-1F-2020, BL1-FN-2F-1010 | 176d | 10d | Cash Flow [9064.45 h]; Electrician [336 h]; Excavation [14] | 9,064.45 | MEP | EL | 2nd Fix | 2f |
| BL1-MEP-EL-2F-2010 |  | Fire Alarm System Wiring | 12d | 2015-03-11 | 2015-03-24 | BL1-MEP-EL-2F-1000, BL1-MEP-EL-1F-2000, BL1-FN-2F-1010 | 178d | 12d | Cash Flow [7111.01 h]; Electrician [192 h]; Excavation [12] | 7,111.01 | MEP | EL | 2nd Fix | 2f |
| BL1-MEP-EL-2F-2020 |  | Low Current System Wiring | 14d | 2015-03-11 | 2015-03-26 | BL1-MEP-EL-2F-1000, BL1-FN-2F-1010 | 240d | 49d | Cash Flow [38217.8 h]; Electrician [244 h]; Excavation [14] | 38,217.78 | MEP | EL |  | 2f |
| BL1-MEP-EL-2F-2040 |  | Lighting Wiring | 12d | 2015-03-11 | 2015-03-24 | BL1-MEP-EL-2F-1000, BL1-MEP-EL-1F-2040, BL1-FN-2F-1010 | 178d | 12d | Cash Flow [3566.08 h]; Electrician [241.71 h]; Excavation [12] | 3,566.08 | MEP | EL | 2nd Fix | 2f |
| BL1-MEP-EL-2F-2050 |  | Power Points Wiring | 12d | 2015-03-11 | 2015-03-24 | BL1-MEP-EL-2F-1000, BL1-MEP-EL-1F-2050, BL1-FN-2F-1010 | 166d | 3d | Cash Flow [2894.21 h]; Electrician [192 h]; Excavation [12] | 2,894.21 | MEP | EL | 2nd Fix | 2f |
| BL1-MEP-EL-2F-2060 |  | Emergency Light Wiring | 8d | 2015-03-11 | 2015-03-19 | BL1-MEP-EL-2F-1000, BL1-MEP-EL-1F-2060, BL1-FN-2F-1010 | 182d | 16d | Cash Flow [1202.03 h]; Electrician [128 h]; Excavation [8] | 1,202.03 | MEP | EL | 2nd Fix | 2f |
| BL1-MEP-EL-2F-2070 |  | DB's Installation and Termination | 12d | 2015-03-29 | 2015-04-11 | BL1-MEP-EL-2F-1010, BL1-MEP-EL-1F-2070, BL1-MEP-EL-2F-2050, BL1-FN-2F-1020 | 163d | 0d | Cash Flow [4970.93 h]; Electrician [288 h]; Excavation [12] | 4,970.93 | MEP | EL | 2nd Fix | 2f |
| BL1-MEP-EL-2F-2030 |  | SMDB's Installation | 6d | 2015-03-31 | 2015-04-06 | BL1-MEP-EL-2F-1000, BL1-FN-2F-1020, BL1-MEP-EL-1F-2030 | 264d | 16d | Cash Flow [4196.6 h]; Electrician [45 h]; Excavation [6] | 4,196.6 | MEP | EL | 2nd Fix | 2f |
| BL1-MEP-EL-2F-3060 |  | Power Cable Puling | 14d | 2015-04-12 | 2015-04-27 | BL1-MEP-EL-2F-2000, BL1-MEP-EL-2F-2040, BL1-MEP-EL-2F-2050, BL1-MEP-EL-1F-3060, BL1-MEP-EL-2F-2070 | 191d | 10d | Cash Flow [6361.76 h]; Electrician [168 h]; Excavation [14] | 6,361.76 | MEP | EL | 2nd Fix | 2f |
|  | 3 | **Final Fix** |  | 2015-05-24 | 2015-07-09 |  |  |  |  |  |  |  |  |  |
| BL1-MEP-EL-2F-3000 |  | Emergency Light Fixing | 8d | 2015-05-24 | 2015-06-01 | BL1-MEP-EL-2F-2060, BL1-FN-2F-1070, BL1-MEP-EL-1F-3010 | 231d | 16d | Cash Flow [5714.02 h]; Electrician [128 h]; Excavation [8] | 5,714.02 | MEP | EL | Final F | ff |
| BL1-MEP-EL-2F-3010 |  | Fire Alarm System Detector Installation | 12d | 2015-05-24 | 2015-06-05 | BL1-MEP-EL-2F-2010, BL1-FN-2F-1070, BL1-MEP-EL-1F-3020 | 199d | 12d | Cash Flow [4034.38 h]; Electrician [192 h]; Excavation [12] | 4,034.38 | MEP | EL | Final F | ff |
| BL1-MEP-EL-2F-3030 |  | Despature for Low Current System Installation | 14d | 2015-05-24 | 2015-06-07 | BL1-MEP-EL-2F-2020, BL1-MEP-EL-1F-3030, BL1-FN-2F-1020, BL1-FN-2F-1070 | 191d | 0d | Cash Flow [72738.2 h]; Electrician [336 h]; Excavation [14] | 72,738.16 | MEP | EL |  | ff |
| BL1-MEP-EL-2F-3050 |  | Sockets and Switches Fixing | 8d | 2015-05-24 | 2015-06-01 | BL1-MEP-EL-2F-2050, BL1-FN-2F-1070, BL1-MEP-EL-1F-3050 | 223d | 16d | Cash Flow [1166.96 h]; Electrician [128 h]; Excavation [8] | 1,166.96 | MEP | EL | Final F | ff |
| BL1-MEP-EL-2F-3070 |  | SMDB's Termination and Final Connection | 6d | 2015-05-24 | 2015-05-30 | BL1-MEP-EL-2F-2030, BL1-MEP-EL-1F-3070, BL1-MEP-EL-2F-3060, BL1-FN-2F-1070 | 224d | 18d | Cash Flow [2785.83 h]; Electrician [192 h]; Excavation [6] | 2,785.82 | MEP | EL | Final F | ff |
| BL1-MEP-EL-2F-3040 |  | Low Current System Outlet installation and Connection | 10d | 2015-06-08 | 2015-06-17 | BL1-MEP-EL-2F-2020, BL1-MEP-EL-2F-3030 | 239d | 33d | Cash Flow [3860.79 h]; Electrician [80 h]; Excavation [10] | 3,860.79 | MEP | EL |  | ff |
| BL1-MEP-EL-2F-3020 |  | Lights Fitting Fixing | 14d | 2015-06-26 | 2015-07-09 | BL1-MEP-EL-2F-2040, BL1-FN-2F-1070, BL1-MEP-EL-1F-3000 | 155d | 0d | Cash Flow [7322.66 h]; Electrician [244 h]; Excavation [14] | 7,322.66 | MEP | EL | Final F | ff |

| ID | WBS | Activity | Duration | Start | Finish | Predecessors | Total float | Free float | Resources | Cost | Structural | Responsibility | MEP Systems | MEP Steps | Finishing | Fix |
| --- | --- | --- | --- | --- | --- | --- | --- | --- | --- | --- | --- | --- | --- | --- | --- | --- |
|  | 6 | **3rd Floor** |  | 2014-11-15 | 2015-08-10 |  |  |  |  |  |  |  |  |  |  |  |
|  | 1 | **Structural** |  | 2014-11-15 | 2014-12-11 |  |  |  |  |  |  |  |  |  |  |  |
| BL1-ST-3F-1000 |  | Reinforcement for Verticals | 8d | 2014-11-15 | 2014-11-23 | ENG-STR-BL1-APP200, ENG-STR-BL1-APP210, BL1-ST-2F-1070 | 57.5d | 0d | MNHRS [644.34 h]; Cash Flow [43079.3 h]; Reinforcement [34189.9]; Excavation [8] | 43,079.3 | STR |  |  |  |  |  |
| BL1-ST-3F-1010 |  | MEP Works in Vertical Element | 5d | 2014-11-18 | 2014-11-23 | ENGMEP8640, BL1-ST-3F-1000 FF | 61.5d | 4d | Cash Flow [1798.55 h]; Electrician [160 h]; Excavation [5] | 1,798.55 |  | MEP | EL | B.W |  |  |
| BL1-ST-3F-1020 |  | FW for Verticals | 4d | 2014-11-24 | 2014-11-27 | BL1-ST-3F-1000 | 57.5d | 0d | MNHRS [7977.59 h]; Cash Flow [35073 h]; FW [1126.3]; Excavation [4] | 35,072.98 | STR |  |  |  |  |  |
| BL1-ST-3F-1030 |  | Concrete Verticals | 1d | 2014-11-29 | 2014-11-29 | BL1-ST-3F-1020, BL1-ST-3F-1010 | 57.5d | 0d | MNHRS [1383.9 h]; Cash Flow [23230.5 h]; Concrete [168.3]; Excavation [1] | 23,230.45 | STR |  |  |  |  |  |
| BL1-ST-3F-1040 |  | FW for Slab | 5d | 2014-11-30 | 2014-12-04 | BL1-ST-3F-1030 | 57.5d | 0d | MNHRS [11871.1 h]; Cash Flow [52190.6 h]; FW [1676]; Excavation [5] | 52,190.64 | STR |  |  |  |  |  |
| BL1-ST-3F-1050 |  | Reinforcement for Slab | 5d | 2014-12-06 | 2014-12-10 | BL1-ST-3F-1040 | 57.5d | 0d | MNHRS [1189.26 h]; Cash Flow [79511.8 h]; Reinforcement [63104.5]; Excavation [5] | 79,511.76 | STR |  |  |  |  |  |
| BL1-ST-3F-1060 |  | MEP Works in Slab & Beams | 5d | 2014-12-06 | 2014-12-10 | ENGMEP8640, BL1-ST-3F-1050 FF | 57.5d | 0d | Cash Flow [3349.02 h]; Electrician [320 h]; Excavation [5] | 3,349.02 |  | MEP | EL | B.W |  |  |
| BL1-ST-3F-1070 |  | Concrete for Slab | 1d | 2014-12-11 | 2014-12-11 | BL1-ST-3F-1050, BL1-ST-3F-1060 | 57.5d | 0d | MNHRS [3063.82 h]; Cash Flow [51430 h]; Concrete [372.6]; Excavation [1] | 51,429.98 | STR |  |  |  |  |  |
|  | 2 | **Fiishing** |  | 2015-02-09 | 2015-08-10 |  |  |  |  |  |  |  |  |  |  |  |
| BL1-FN-3F-1000 |  | Block Works | 20d | 2015-02-09 | 2015-03-03 | BL1-ST-4F-1070 FS+12d, BL1-ST-5F-1070 | 118d | 0d | Cash Flow [26434.9 h]; MNHRS [1988 h]; BW [519]; Excavation [20] | 26,434.94 |  |  |  |  | FIN |  |
| BL1-FN-3F-1010 |  | Plaster | 18d | 2015-03-18 | 2015-04-07 | BL1-FN-3F-1000, BL1-MEP-PL-3F-1010, BL1-MEP-PL-3F-1000 | 124d | 0d | MNHRS [2245.5 h]; Cash Flow [26392 h]; Plaster [749]; Excavation [18] | 26,392.04 |  |  |  |  | FIN |  |
| BL1-FN-3F-1020 |  | Paint 1st Coat | 15d | 2015-04-08 | 2015-04-25 | BL1-FN-3F-1010 | 124d | 0d | MNHRS [674 h]; Cash Flow [4064.48 h]; Painting [749]; Excavation [15] | 4,064.48 |  |  |  |  | FIN |  |
| BL1-FN-3F-1030 |  | Ceiling Paint | 10d | 2015-04-20 | 2015-04-30 | BL1-FN-3F-1020 SS+10d | 124d | 0d | MNHRS [26.6 h]; Cash Flow [160.32 h]; Painting [30]; Excavation [10] | 160.32 |  |  |  |  | FIN |  |
| BL1-FN-3F-1040 |  | Waterproofing | 5d | 2015-05-02 | 2015-05-06 | BL1-FN-3F-1030 | 124d | 0d | MNHRS [6.9 h]; Cash Flow [131.19 h]; Waterproofing [23]; Excavation [5] | 131.19 |  |  |  |  | FIN |  |
| BL1-FN-3F-1050 |  | Wall Tiling | 10d | 2015-05-02 | 2015-05-12 | BL1-FN-3F-1030 | 142d | 18d | MNHRS [1184 h]; Cash Flow [5254.47 h]; Tiling [118.4]; Excavation [10] | 5,254.47 |  |  |  |  | FIN |  |
| BL1-FN-3F-1060 |  | Flooring Works | 20d | 2015-05-07 | 2015-05-30 | BL1-FN-3F-1040 | 124d | 0d | MNHRS [1346 h]; Cash Flow [31373.1 h]; Tiling [205]; Excavation [20] | 31,373.06 |  |  |  |  | FIN |  |
| BL1-FN-3F-1070 |  | False Ceiling | 15d | 2015-06-03 | 2015-06-17 | BL1-FN-3F-1050, BL1-MEP-AC-3F-2070 FF+6d, BL1-MEP-PL-3F-2030 FF+6d, BL1-MEP-PL-3F-2040 FF+6d, BL1-MEP-AC-3F-2050 FF+6d, BL1-MEP-EL-3F-2060 FF+6d, BL1-MEP-EL-3F-2040 FF+6d, BL1-MEP-EL-3F-2050 FF+6d, BL1-MEP-EL-3F-2000 FF+6d, BL1-MEP-EL-3F-2010 FF+6d, BL1-MEP-EL-3F-2070 FF+6d | 124d | 0d | Cash Flow [48117 h]; False Ceiling [931]; MNHRS [5855 h]; Excavation [15] | 48,117 |  |  |  |  | FIN |  |
| BL1-FN-3F-1080 |  | Hand Rails for Stairs | 15d | 2015-06-18 | 2015-07-02 | BL1-FN-3F-1070 | 124d | 0d | Cash Flow [9483.79 h]; Metal Works & Handrail [20]; MNHRS [43 h]; Excavation [15] | 9,483.79 |  |  |  |  | FIN |  |
| BL1-FN-3F-1090 |  | Doors Installation | 15d | 2015-07-03 | 2015-07-17 | BL1-FN-3F-1080, BL1-FN-2F-1090 | 124d | 0d | Cash Flow [31765.1 h]; Excavation [15] | 31,765.06 |  |  |  |  | FIN |  |
| BL1-FN-3F-1100 |  | Final Paint | 10d | 2015-08-01 | 2015-08-10 | BL1-FN-3F-1060, BL1-MEP-AC-3F-3000 FF+4d, BL1-MEP-EL-3F-3040 FF+4d, BL1-MEP-EL-3F-3000 FF+4d, BL1-MEP-EL-3F-3020 FF+4d, BL1-MEP-EL-3F-3010 FF+4d, BL1-MEP-EL-3F-3050 FF+4d, BL1-MEP-PL-3F-3000 FF+4d, BL1-MEP-PL-3F-3010 FF+4d, BL1-MEP-FF-3F-3010 FF+4d, BL1-MEP-EL-3F-3070 FF+4d, BL1-MEP-EL-3F-3030 FF+4d | 191d | 0d | Excavation [10] |  |  |  |  |  | FIN |  |
|  | 7 | **MEP Work** |  | 2015-02-22 | 2015-08-06 |  |  |  |  |  |  |  |  |  |  |  |
|  | 1 | **Mechanical System** |  | 2015-03-04 | 2015-08-06 |  |  |  |  |  |  |  |  |  |  |  |
|  | 2 | **HVAC Works** |  | 2015-03-04 | 2015-07-11 |  |  |  |  |  |  |  |  |  |  |  |
|  | 1 | **1st Fix** |  | 2015-03-04 | 2015-03-17 |  |  |  |  |  |  |  |  |  |  |  |
| BL1-MEP-AC-3F-1000 |  | Supports and Hungers Fixing | 12d | 2015-03-04 | 2015-03-17 | BL1-MEP-AC-2F-1000, BL1-FN-3F-1000 | 145d | 11d | Cash Flow [326.47 h]; Ductman [192 h]; Excavation [12] | 326.47 |  | MEP | AC | 1st Fix |  | 1f |

| ID | WBS | Activity | Duration | Start | Finish | Predecessors | Total float | Free float | Resources | Cost | Responsibility | MEP Systems | MEP Steps | Fix |
| --- | --- | --- | --- | --- | --- | --- | --- | --- | --- | --- | --- | --- | --- | --- |
|  | 3 | **2nd Fix** |  | 2015-04-08 | 2015-05-23 |  |  |  |  |  |  |  |  |  |
| BL1-MEP-AC-3F-2000 |  | Chilled Water Pipes and Fittings Installation | 21d | 2015-04-08 | 2015-05-02 | BL1-MEP-AC-3F-1000, BL1-MEP-AC-2F-2000, BL1-FN-3F-1010 | 127d | 0d | Cash Flow [5230.19 h]; Pipe Fitter - CHW [840 h]; Excavation [21] | 5,230.19 | MEP | AC | 2nd Fix | 2f |
| BL1-MEP-AC-3F-2040 |  | FCU's Installation | 8d | 2015-04-08 | 2015-04-16 | BL1-MEP-AC-3F-1000, BL1-MEP-AC-2F-2050, BL1-FN-3F-1010 | 164d | 15d | Cash Flow [5992.06 h]; Pipe Fitter - CHW [192 h]; Excavation [8] | 5,992.06 | MEP | AC | 2nd Fix | 2f |
| BL1-MEP-AC-3F-2010 |  | Duct Installation and Insulation | 21d | 2015-04-11 | 2015-05-04 | BL1-MEP-AC-3F-1000, BL1-MEP-AC-2F-2010, BL1-FN-3F-1010 | 126d | 0d | Cash Flow [4329.94 h]; Ductman [263 h]; Excavation [21] | 4,329.94 | MEP | AC | 2nd Fix | 2f |
| BL1-MEP-AC-3F-2020 |  | Chilled Water Pipes Pressure Test | 6d | 2015-05-03 | 2015-05-09 | BL1-MEP-AC-3F-2000 | 145d | 0d | Cash Flow [581.12 h]; Pipe Fitter - CHW [96 h]; Excavation [6] | 581.12 | MEP | AC | 2nd Fix | 2f |
| BL1-MEP-AC-3F-2050 |  | Duct Accessories Installation | 14d | 2015-05-05 | 2015-05-20 | BL1-MEP-AC-3F-2010, BL1-MEP-AC-2F-2040 | 144d | 7d | Cash Flow [652.97 h]; Pipe Fitter - CHW [448 h]; Excavation [14] | 652.97 | MEP | AC | 2nd Fix | 2f |
| BL1-MEP-AC-3F-2030 |  | Chilled Water Pipes Insulation | 12d | 2015-05-10 | 2015-05-23 | BL1-MEP-AC-3F-2020, BL1-MEP-AC-2F-2030 | 214d | 11d | Cash Flow [1658.21 h]; Pipe Fitter - CHW [384 h]; Excavation [12] | 1,658.21 | MEP | AC | 2nd Fix | 2f |
| BL1-MEP-AC-3F-2060 |  | Valve Package Installation | 6d | 2015-05-10 | 2015-05-16 | BL1-MEP-AC-3F-2040, BL1-MEP-AC-3F-2020 | 145d | 0d | Cash Flow [2380.49 h]; Pipe Fitter - CHW [96 h]; Excavation [6] | 2,380.49 | MEP | AC | 2nd Fix | 2f |
| BL1-MEP-AC-3F-2070 |  | FCU's Drain Pipes Installation | 3d | 2015-05-17 | 2015-05-19 | BL1-MEP-AC-3F-2040, BL1-MEP-AC-3F-2060, BL1-MEP-AC-2F-2070 | 145d | 20d | Cash Flow [516.93 h]; Pipe Fitter - CHW [48 h]; Excavation [3] | 516.93 | MEP | AC | 2nd Fix | 2f |
|  | 4 | **Final Fix** |  | 2015-06-30 | 2015-07-11 |  |  |  |  |  |  |  |  |  |
| BL1-MEP-AC-3F-3000 |  | Grills and Diffusers Fixing | 12d | 2015-06-30 | 2015-07-11 | BL1-MEP-AC-3F-2050, BL1-MEP-AC-2F-3000, BL1-FN-3F-1070 | 184d | 0d | Cash Flow [11538.6 h]; Ductman [384 h]; Excavation [12] | 11,538.61 | MEP | AC | Final F | ff |
|  | 1 | **Plumbing and Drainage Works** |  | 2015-03-04 | 2015-08-06 |  |  |  |  |  |  |  |  |  |
|  | 1 | **1st Fix** |  | 2015-03-04 | 2015-03-17 |  |  |  |  |  |  |  |  |  |
| BL1-MEP-PL-3F-1000 |  | Low Level Water Supply Pipes Installation | 12d | 2015-03-04 | 2015-03-17 | BL1-MEP-PL-2F-1000, BL1-FN-3F-1000 | 124d | 0d | Cash Flow [713.22 h]; Plumber [42 h]; Excavation [12] | 713.22 | MEP | PL & D | 1st Fix | 1f |
| BL1-MEP-PL-3F-1010 |  | Low Level Drainage Pipes Installation | 12d | 2015-03-04 | 2015-03-17 | BL1-MEP-PL-2F-1010, BL1-FN-3F-1000 | 124d | 0d | Cash Flow [2279.46 h]; Plumber [12.67 h]; Excavation [12] | 2,279.46 | MEP | PL & D | 1st Fix | 1f |
| BL1-MEP-PL-3F-1020 |  | Supports installation for High level Pipes | 12d | 2015-03-04 | 2015-03-17 | BL1-MEP-PL-2F-1020, BL1-FN-3F-1000 | 154d | 11d | Cash Flow [819.68 h]; Plumber [16.35 h]; Excavation [12] | 819.68 | MEP | PL & D | 1st Fix | 1f |
|  | 3 | **2nd Fix** |  | 2015-04-08 | 2015-06-11 |  |  |  |  |  |  |  |  |  |
| BL1-MEP-PL-3F-2000 |  | High Level Drainage Pipes Installation | 21d | 2015-04-08 | 2015-05-02 | BL1-MEP-PL-3F-1020, BL1-MEP-PL-3F-1010, BL1-FN-3F-1010, BL1-MEP-PL-2F-2000 | 136d | 2d | Cash Flow [6562.53 h]; Plumber [244.38 h]; Excavation [21] | 6,562.53 | MEP | PL & D | 2nd Fix | 2f |
| BL1-MEP-PL-3F-2020 |  | High Level Water Supply Pipes and Fittings Installation | 21d | 2015-04-08 | 2015-05-02 | BL1-MEP-PL-3F-1020, BL1-MEP-PL-3F-1000, BL1-MEP-PL-2F-2020, BL1-FN-3F-1010 | 136d | 0d | Cash Flow [1308.6 h]; Plumber [150.02 h]; Excavation [21] | 1,308.6 | MEP | PL & D | 2nd Fix | 2f |
| BL1-MEP-PL-3F-2040 |  | Water Supply Pipes Pressure Test | 6d | 2015-05-03 | 2015-05-09 | BL1-MEP-PL-3F-2020, BL1-MEP-PL-3F-1000, BL1-MEP-PL-2F-2040 | 154d | 17d | Cash Flow [145.74 h]; Plumber [48 h]; Excavation [6] | 145.74 | MEP | PL & D | 2nd Fix | 2f |
| BL1-MEP-PL-3F-2010 |  | Floor Drain Installation | 6d | 2015-05-31 | 2015-06-05 | BL1-MEP-PL-2F-2010, BL1-FN-3F-1060 | 124d | 0d | Cash Flow [548.14 h]; Plumber [6 h]; Excavation [6] | 548.14 | MEP | PL & D | 1st Fix | 2f |
| BL1-MEP-PL-3F-2030 |  | Drainage Pipes Gravity Test | 6d | 2015-06-06 | 2015-06-11 | BL1-MEP-PL-3F-2000, BL1-MEP-PL-3F-1010, BL1-MEP-PL-3F-2010, BL1-MEP-PL-2F-2030 | 124d | 0d | Cash Flow [820.24 h]; Plumber [48 h]; Excavation [6] | 820.24 | MEP | PL & D | 2nd Fix | 2f |
|  | 4 | **Final Fix** |  | 2015-07-18 | 2015-08-06 |  |  |  |  |  |  |  |  |  |
| BL1-MEP-PL-3F-3000 |  | Sanitary Ware Installation Including Connection | 14d | 2015-07-18 | 2015-07-31 | BL1-MEP-PL-3F-2040, BL1-MEP-PL-3F-2030, BL1-MEP-PL-2F-3000, BL1-FN-3F-1060, BL1-FN-3F-1050, BL1-FN-3F-1070, BL1-FN-3F-1090 | 127d | 0d | Cash Flow [4439.52 h]; Plumber [383.86 h]; Excavation [14] | 4,439.52 | MEP | PL & D | Final F | ff |
| BL1-MEP-PL-3F-3010 |  | Sanitary Ware Accessories Installation | 6d | 2015-08-01 | 2015-08-06 | BL1-MEP-PL-3F-3000, BL1-MEP-PL-2F-3010 | 151d | 0d | Cash Flow [160.22 h]; Plumber [36.45 h]; Excavation [6] | 160.22 | MEP | PL & D | Final F | ff |

| ID | WBS | Activity | Duration | Start | Finish | Predecessors | Total float | Free float | Resources | Cost | Responsibility | MEP Systems | MEP Steps | Fix |
| --- | --- | --- | --- | --- | --- | --- | --- | --- | --- | --- | --- | --- | --- | --- |
|  | 3 | **Fire Fighting Works** |  | 2015-07-21 | 2015-08-03 |  |  |  |  |  |  |  |  |  |
|  | 4 | **Final Fix** |  | 2015-07-21 | 2015-08-03 |  |  |  |  |  |  |  |  |  |
| BL1-MEP-FF-3F-3010 |  | Hose reel Cabinet Installation and Connection | 6d | 2015-07-21 | 2015-07-26 | BL1-MEP-FF-2F-3010, BL1-FN-3F-1050, BL1-FN-3F-1070 | 187d | 0d | Cash Flow [1330.85 h]; Plumber [192 h]; Excavation [6] | 1,330.85 | MEP | FF | Final F | ff |
| BL1-MEP-FF-3F-3000 |  | Fire Extinguisher Installation | 2d | 2015-08-02 | 2015-08-03 | BL1-MEP-FF-2F-3000, BL1-FN-3F-1050, BL1-FN-3F-1100 SS+1d | 191d | 21d | Cash Flow [1074.99 h]; Plumber [8 h]; Excavation [2] | 1,074.99 | MEP | FF | Final F | ff |
|  | 3 | **Electrical System** |  | 2015-02-22 | 2015-07-23 |  |  |  |  |  |  |  |  |  |
|  | 1 | **1st Fix** |  | 2015-02-22 | 2015-03-10 |  |  |  |  |  |  |  |  |  |
| BL1-MEP-EL-3F-1000 |  | PVC Back Boxes and Conduits Fixing in Wall | 12d | 2015-02-22 | 2015-03-07 | BL1-MEP-EL-2F-1000, BL1-FN-3F-1000 SS+3d, BL1-FN-3F-1000 FF+3d | 118d | 11d | Cash Flow [3307.67 h]; Electrician [384 h]; Excavation [12] | 3,307.67 | MEP | EL | 1st Fix | 1f |
| BL1-MEP-EL-3F-1010 |  | DB's Inclosure Fixing | 6d | 2015-03-04 | 2015-03-10 | BL1-MEP-EL-2F-1010, BL1-FN-3F-1000 | 139d | 17d | Cash Flow [2130.4 h]; Electrician [96 h]; Excavation [6] | 2,130.4 | MEP | EL | 1st Fix | 1f |
|  | 2 | **2nd Fix** |  | 2015-04-08 | 2015-05-25 |  |  |  |  |  |  |  |  |  |
| BL1-MEP-EL-3F-2000 |  | Cable Tray and Trunking Installation | 14d | 2015-04-08 | 2015-04-23 | BL1-MEP-EL-2F-2000, BL1-FN-3F-1010 | 167d | 9d | Cash Flow [9064.45 h]; Electrician [336 h]; Excavation [14] | 9,064.45 | MEP | EL | 2nd Fix | 2f |
| BL1-MEP-EL-3F-2010 |  | Fire Alarm System Wiring | 12d | 2015-04-08 | 2015-04-21 | BL1-MEP-EL-3F-1000, BL1-MEP-EL-2F-2010, BL1-FN-3F-1010 | 169d | 11d | Cash Flow [7111.01 h]; Electrician [192 h]; Excavation [12] | 7,111.01 | MEP | EL | 2nd Fix | 2f |
| BL1-MEP-EL-3F-2020 |  | Low Current System Wiring | 14d | 2015-04-08 | 2015-04-23 | BL1-MEP-EL-3F-1000, BL1-FN-3F-1010 | 230d | 49d | Cash Flow [38217.8 h]; Electrician [244 h]; Excavation [14] | 38,217.78 | MEP | EL |  | 2f |
| BL1-MEP-EL-3F-2040 |  | Lighting Wiring | 12d | 2015-04-08 | 2015-04-21 | BL1-MEP-EL-3F-1000, BL1-MEP-EL-2F-2040, BL1-FN-3F-1010 | 169d | 11d | Cash Flow [3566.08 h]; Electrician [241.71 h]; Excavation [12] | 3,566.08 | MEP | EL | 2nd Fix | 2f |
| BL1-MEP-EL-3F-2050 |  | Power Points Wiring | 12d | 2015-04-08 | 2015-04-21 | BL1-MEP-EL-3F-1000, BL1-MEP-EL-2F-2050, BL1-FN-3F-1010 | 157d | 3d | Cash Flow [2894.21 h]; Electrician [192 h]; Excavation [12] | 2,894.21 | MEP | EL | 2nd Fix | 2f |
| BL1-MEP-EL-3F-2060 |  | Emergency Light Wiring | 8d | 2015-04-08 | 2015-04-16 | BL1-MEP-EL-3F-1000, BL1-MEP-EL-2F-2060, BL1-FN-3F-1010 | 173d | 15d | Cash Flow [1202.03 h]; Electrician [128 h]; Excavation [8] | 1,202.03 | MEP | EL | 2nd Fix | 2f |
| BL1-MEP-EL-3F-2030 |  | SMDB's Installation | 6d | 2015-04-26 | 2015-05-02 | BL1-MEP-EL-3F-1000, BL1-FN-3F-1020, BL1-MEP-EL-2F-2030 | 248d | 17d | Cash Flow [4196.6 h]; Electrician [45 h]; Excavation [6] | 4,196.6 | MEP | EL | 2nd Fix | 2f |
| BL1-MEP-EL-3F-2070 |  | DB's Installation and Termination | 12d | 2015-04-26 | 2015-05-09 | BL1-MEP-EL-3F-1010, BL1-MEP-EL-2F-2070, BL1-MEP-EL-3F-2050, BL1-FN-3F-1020 | 154d | 0d | Cash Flow [4970.93 h]; Electrician [288 h]; Excavation [12] | 4,970.93 | MEP | EL | 2nd Fix | 2f |
| BL1-MEP-EL-3F-3060 |  | Power Cable Puling | 14d | 2015-05-10 | 2015-05-25 | BL1-MEP-EL-3F-2000, BL1-MEP-EL-3F-2040, BL1-MEP-EL-3F-2050, BL1-MEP-EL-2F-3060, BL1-MEP-EL-3F-2070 | 181d | 9d | Cash Flow [6361.76 h]; Electrician [168 h]; Excavation [14] | 6,361.76 | MEP | EL | 2nd Fix | 2f |
|  | 3 | **Final Fix** |  | 2015-06-18 | 2015-07-23 |  |  |  |  |  |  |  |  |  |
| BL1-MEP-EL-3F-3000 |  | Emergency Light Fixing | 8d | 2015-06-18 | 2015-06-25 | BL1-MEP-EL-3F-2060, BL1-FN-3F-1070, BL1-MEP-EL-2F-3000 | 215d | 15d | Cash Flow [5714.02 h]; Electrician [128 h]; Excavation [8] | 5,714.02 | MEP | EL | Final F | ff |
| BL1-MEP-EL-3F-3010 |  | Fire Alarm System Detector Installation | 12d | 2015-06-18 | 2015-06-29 | BL1-MEP-EL-3F-2010, BL1-FN-3F-1070, BL1-MEP-EL-2F-3010 | 187d | 11d | Cash Flow [4034.38 h]; Electrician [192 h]; Excavation [12] | 4,034.38 | MEP | EL | Final F | ff |
| BL1-MEP-EL-3F-3030 |  | Despature for Low Current System Installation | 14d | 2015-06-18 | 2015-07-01 | BL1-MEP-EL-3F-2020, BL1-MEP-EL-2F-3030, BL1-FN-3F-1020, BL1-FN-3F-1070 | 181d | 0d | Cash Flow [72738.2 h]; Electrician [336 h]; Excavation [14] | 72,738.16 | MEP | EL |  | ff |
| BL1-MEP-EL-3F-3050 |  | Sockets and Switches Fixing | 8d | 2015-06-18 | 2015-06-25 | BL1-MEP-EL-3F-2050, BL1-FN-3F-1070, BL1-MEP-EL-2F-3050 | 207d | 15d | Cash Flow [1166.96 h]; Electrician [128 h]; Excavation [8] | 1,166.96 | MEP | EL | Final F | ff |
| BL1-MEP-EL-3F-3070 |  | SMDB's Termination and Final Connection | 6d | 2015-06-18 | 2015-06-23 | BL1-MEP-EL-3F-2030, BL1-MEP-EL-2F-3070, BL1-MEP-EL-3F-3060, BL1-FN-3F-1070 | 206d | 17d | Cash Flow [2785.83 h]; Electrician [192 h]; Excavation [6] | 2,785.82 | MEP | EL | Final F | ff |
| BL1-MEP-EL-3F-3040 |  | Low Current System Outlet installation and Connection | 10d | 2015-07-02 | 2015-07-11 | BL1-MEP-EL-3F-2020, BL1-MEP-EL-3F-3030 | 217d | 26d | Cash Flow [3860.79 h]; Electrician [80 h]; Excavation [10] | 3,860.79 | MEP | EL |  | ff |
| BL1-MEP-EL-3F-3020 |  | Lights Fitting Fixing | 14d | 2015-07-10 | 2015-07-23 | BL1-MEP-EL-3F-2040, BL1-FN-3F-1070, BL1-MEP-EL-2F-3020 | 155d | 0d | Cash Flow [7322.66 h]; Electrician [244 h]; Excavation [14] | 7,322.66 | MEP | EL | Final F | ff |

| ID | WBS | Activity | Duration | Start | Finish | Predecessors | Total float | Free float | Resources | Cost | Structural | Responsibility | MEP Systems | MEP Steps | Finishing | Fix |
| --- | --- | --- | --- | --- | --- | --- | --- | --- | --- | --- | --- | --- | --- | --- | --- | --- |
|  | 7 | **4th Floor** |  | 2014-12-13 | 2015-09-02 |  |  |  |  |  |  |  |  |  |  |  |
|  | 1 | **Structural** |  | 2014-12-13 | 2015-01-11 |  |  |  |  |  |  |  |  |  |  |  |
| BL1-ST-4F-1000 |  | Reinforcement for Verticals | 8d | 2014-12-13 | 2014-12-21 | ENG-STR-BL1-APP220, ENG-STR-BL1-APP230, ENG-STR-BL1-APP240, ENG-STR-BL1-APP250, ENG-STR-BL1-APP260, BL1-ST-3F-1070 | 57.5d | 0d | MNHRS [644.34 h]; Cash Flow [43079.3 h]; Reinforcement [34189.9]; Excavation [8] | 43,079.3 | STR |  |  |  |  |  |
| BL1-ST-4F-1010 |  | MEP Works in Vertical Element | 5d | 2014-12-16 | 2014-12-21 | ENGMEP8640, BL1-ST-4F-1000 FF | 61.5d | 4d | Cash Flow [1798.55 h]; Electrician [160 h]; Excavation [5] | 1,798.55 |  | MEP | EL | B.W |  |  |
| BL1-ST-4F-1020 |  | FW for Verticals | 4d | 2014-12-22 | 2014-12-25 | BL1-ST-4F-1000 | 57.5d | 0d | MNHRS [7977.59 h]; Cash Flow [35073 h]; FW [1126.3]; Excavation [4] | 35,072.98 | STR |  |  |  |  |  |
| BL1-ST-4F-1030 |  | Concrete Verticals | 1d | 2014-12-27 | 2014-12-27 | BL1-ST-4F-1020, BL1-ST-4F-1010 | 57.5d | 0d | MNHRS [1383.9 h]; Cash Flow [23230.5 h]; Concrete [168.3]; Excavation [1] | 23,230.45 | STR |  |  |  |  |  |
| BL1-ST-4F-1040 |  | FW for Slab | 5d | 2014-12-28 | 2015-01-04 | BL1-ST-4F-1030 | 57.5d | 0d | MNHRS [11871.1 h]; Cash Flow [52190.6 h]; FW [1676]; Excavation [5] | 52,190.64 | STR |  |  |  |  |  |
| BL1-ST-4F-1050 |  | Reinforcement for Slab | 5d | 2015-01-05 | 2015-01-10 | BL1-ST-4F-1040 | 57.5d | 0d | MNHRS [1189.26 h]; Cash Flow [79511.8 h]; Reinforcement [63104.5]; Excavation [5] | 79,511.76 | STR |  |  |  |  |  |
| BL1-ST-4F-1060 |  | MEP Works in Slab & Beams | 5d | 2015-01-05 | 2015-01-10 | ENGMEP8640, BL1-ST-4F-1050 FF | 57.5d | 0d | Cash Flow [3349.02 h]; Electrician [320 h]; Excavation [5] | 3,349.02 |  | MEP | EL | B.W |  |  |
| BL1-ST-4F-1070 |  | Concrete for Slab | 1d | 2015-01-11 | 2015-01-11 | BL1-ST-4F-1050, BL1-ST-4F-1060 | 57.5d | 0d | MNHRS [3063.82 h]; Cash Flow [51430 h]; Concrete [372.6]; Excavation [1] | 51,429.98 | STR |  |  |  |  |  |
|  | 2 | **Fiishing** |  | 2015-03-08 | 2015-09-02 |  |  |  |  |  |  |  |  |  |  |  |
| BL1-FN-4F-1000 |  | Block Works | 20d | 2015-03-08 | 2015-03-30 | BL1-ST-5F-1070 FS+12d, BL1-ST-6F-1070 | 107d | 0d | Cash Flow [26434.9 h]; MNHRS [1988 h]; BW [519]; Excavation [20] | 26,434.94 |  |  |  |  | FIN |  |
| BL1-FN-4F-1010 |  | Plaster | 18d | 2015-04-14 | 2015-05-04 | BL1-FN-4F-1000, BL1-MEP-PL-4F-1000, BL1-MEP-PL-4F-1010, BL1-MEP-EL-4F-1010, BL1-MEP-EL-4F-1000 | 116d | 0d | MNHRS [2245.5 h]; Cash Flow [26392 h]; Plaster [749]; Excavation [18] | 26,392.04 |  |  |  |  | FIN |  |
| BL1-FN-4F-1020 |  | Paint 1st Coat | 15d | 2015-05-05 | 2015-05-21 | BL1-FN-4F-1010 | 116d | 0d | MNHRS [674 h]; Cash Flow [4064.48 h]; Painting [749]; Excavation [15] | 4,064.48 |  |  |  |  | FIN |  |
| BL1-FN-4F-1030 |  | Ceiling Paint | 10d | 2015-05-17 | 2015-05-27 | BL1-FN-4F-1020 SS+10d | 116d | 0d | MNHRS [26.6 h]; Cash Flow [160.32 h]; Painting [30]; Excavation [10] | 160.32 |  |  |  |  | FIN |  |
| BL1-FN-4F-1040 |  | Waterproofing | 5d | 2015-05-28 | 2015-06-02 | BL1-FN-4F-1030 | 116d | 0d | MNHRS [6.9 h]; Cash Flow [131.19 h]; Waterproofing [23]; Excavation [5] | 131.19 |  |  |  |  | FIN |  |
| BL1-FN-4F-1050 |  | Wall Tiling | 10d | 2015-05-28 | 2015-06-07 | BL1-FN-4F-1030 | 134d | 18d | MNHRS [1184 h]; Cash Flow [5254.47 h]; Tiling [118.4]; Excavation [10] | 5,254.47 |  |  |  |  | FIN |  |
| BL1-FN-4F-1060 |  | Flooring Works | 20d | 2015-06-03 | 2015-06-22 | BL1-FN-4F-1040 | 116d | 0d | MNHRS [1346 h]; Cash Flow [31373.1 h]; Tiling [205]; Excavation [20] | 31,373.06 |  |  |  |  | FIN |  |
| BL1-FN-4F-1070 |  | False Ceiling | 15d | 2015-06-26 | 2015-07-10 | BL1-FN-4F-1050, BL1-MEP-AC-4F-2060 FF+6d, BL1-MEP-PL-4F-2020 FF+6d, BL1-MEP-PL-4F-2030 FF+6d, BL1-MEP-AC-4F-2070 FF+6d, BL1-MEP-EL-4F-2060 FF+6d, BL1-MEP-EL-4F-2040 FF+6d, BL1-MEP-EL-4F-2050 FF+6d, BL1-MEP-EL-4F-2000 FF+6d, BL1-MEP-EL-4F-2010 FF+6d, BL1-MEP-EL-4F-2070 FF+6d | 116d | 0d | Cash Flow [49060 h]; False Ceiling [1262]; MNHRS [5855 h]; Excavation [15] | 49,060 |  |  |  |  | FIN |  |
| BL1-FN-4F-1080 |  | Hand Rails for Stairs | 15d | 2015-07-11 | 2015-07-25 | BL1-FN-4F-1070 | 116d | 0d | Cash Flow [9483.79 h]; Metal Works & Handrail [20]; MNHRS [43 h]; Excavation [15] | 9,483.79 |  |  |  |  | FIN |  |
| BL1-FN-4F-1090 |  | Doors Installation | 15d | 2015-07-26 | 2015-08-09 | BL1-FN-4F-1080, BL1-FN-3F-1090 | 116d | 0d | Cash Flow [31765.1 h]; Excavation [15] | 31,765.06 |  |  |  |  | FIN |  |
| BL1-FN-4F-1100 |  | Final Paint | 10d | 2015-08-24 | 2015-09-02 | BL1-MEP-EL-4F-3050 FF+4d, BL1-FN-4F-1060, BL1-MEP-AC-4F-3000 FF+4d, BL1-MEP-EL-4F-3040 FF+4d, BL1-MEP-EL-4F-3020 FF+4d, BL1-MEP-EL-4F-3010 FF+4d, BL1-MEP-EL-4F-3000 FF+4d, BL1-MEP-PL-4F-3000 FF+4d, BL1-MEP-PL-4F-3010 FF+4d, BL1-MEP-FF-4F-3010 FF+4d, BL1-MEP-EL-4F-3070 FF+4d, BL1-MEP-EL-4F-3030 FF+4d | 170d | 0d | Excavation [10] |  |  |  |  |  | FIN |  |
|  | 8 | **MEP Work** |  | 2015-03-21 | 2015-08-29 |  |  |  |  |  |  |  |  |  |  |  |
|  | 1 | **Mechanical System** |  | 2015-03-31 | 2015-08-29 |  |  |  |  |  |  |  |  |  |  |  |
|  | 2 | **HVAC Works** |  | 2015-03-31 | 2015-07-23 |  |  |  |  |  |  |  |  |  |  |  |
|  | 1 | **1st Fix** |  | 2015-03-31 | 2015-04-13 |  |  |  |  |  |  |  |  |  |  |  |
| BL1-MEP-AC-4F-1000 |  | Supports and Hungers Fixing | 12d | 2015-03-31 | 2015-04-13 | BL1-MEP-AC-3F-1000, BL1-FN-4F-1000 | 143d | 11d | Cash Flow [326.47 h]; Ductman [192 h]; Excavation [12] | 326.47 |  | MEP | AC | 1st Fix |  | 1f |

| ID | WBS | Activity | Duration | Start | Finish | Predecessors | Total float | Free float | Resources | Cost | Responsibility | MEP Systems | MEP Steps | Fix |
| --- | --- | --- | --- | --- | --- | --- | --- | --- | --- | --- | --- | --- | --- | --- |
|  | 3 | **2nd Fix** |  | 2015-05-05 | 2015-06-16 |  |  |  |  |  |  |  |  |  |
| BL1-MEP-AC-4F-2000 |  | Chilled Water Pipes and Fittings Installation | 21d | 2015-05-05 | 2015-05-28 | BL1-MEP-AC-4F-1000, BL1-MEP-AC-3F-2000, BL1-FN-4F-1010 | 125d | 0d | Cash Flow [5230.19 h]; Pipe Fitter - CHW [840 h]; Excavation [21] | 5,230.19 | MEP | AC | 2nd Fix | 2f |
| BL1-MEP-AC-4F-2010 |  | Duct Installation and Insulation | 21d | 2015-05-05 | 2015-05-28 | BL1-MEP-AC-4F-1000, BL1-MEP-AC-3F-2010, BL1-FN-4F-1010 | 126d | 0d | Cash Flow [4329.94 h]; Ductman [263 h]; Excavation [21] | 4,329.94 | MEP | AC | 2nd Fix | 2f |
| BL1-MEP-AC-4F-2020 |  | FCU's Installation | 8d | 2015-05-05 | 2015-05-13 | BL1-MEP-AC-4F-1000, BL1-MEP-AC-3F-2040, BL1-FN-4F-1010 | 156d | 15d | Cash Flow [5992.06 h]; Pipe Fitter - CHW [192 h]; Excavation [8] | 5,992.06 | MEP | AC | 2nd Fix | 2f |
| BL1-MEP-AC-4F-2030 |  | Chilled Water Pipes Pressure Test | 6d | 2015-05-30 | 2015-06-04 | BL1-MEP-AC-4F-2000 | 137d | 0d | Cash Flow [581.12 h]; Pipe Fitter - CHW [96 h]; Excavation [6] | 581.12 | MEP | AC | 2nd Fix | 2f |
| BL1-MEP-AC-4F-2070 |  | Duct Accessories Installation | 14d | 2015-05-30 | 2015-06-12 | BL1-MEP-AC-4F-2010, BL1-MEP-AC-3F-2050 | 138d | 9d | Cash Flow [652.97 h]; Pipe Fitter - CHW [448 h]; Excavation [14] | 652.97 | MEP | AC | 2nd Fix | 2f |
| BL1-MEP-AC-4F-2040 |  | Chilled Water Pipes Insulation | 12d | 2015-06-05 | 2015-06-16 | BL1-MEP-AC-4F-2030, BL1-MEP-AC-3F-2030 | 203d | 11d | Cash Flow [1658.21 h]; Pipe Fitter - CHW [384 h]; Excavation [12] | 1,658.21 | MEP | AC | 2nd Fix | 2f |
| BL1-MEP-AC-4F-2050 |  | Valve Package Installation | 6d | 2015-06-05 | 2015-06-10 | BL1-MEP-AC-4F-2020, BL1-MEP-AC-4F-2030 | 137d | 0d | Cash Flow [2380.49 h]; Pipe Fitter - CHW [96 h]; Excavation [6] | 2,380.49 | MEP | AC | 2nd Fix | 2f |
| BL1-MEP-AC-4F-2060 |  | FCU's Drain Pipes Installation | 3d | 2015-06-11 | 2015-06-13 | BL1-MEP-AC-4F-2020, BL1-MEP-AC-4F-2050, BL1-MEP-AC-3F-2070 | 137d | 20d | Cash Flow [516.93 h]; Pipe Fitter - CHW [48 h]; Excavation [3] | 516.93 | MEP | AC | 2nd Fix | 2f |
|  | 4 | **Final Fix** |  | 2015-07-12 | 2015-07-23 |  |  |  |  |  |  |  |  |  |
| BL1-MEP-AC-4F-3000 |  | Grills and Diffusers Fixing | 12d | 2015-07-12 | 2015-07-23 | BL1-MEP-AC-4F-2070, BL1-MEP-AC-3F-3000, BL1-FN-4F-1070 | 184d | 10d | Cash Flow [11538.6 h]; Ductman [384 h]; Excavation [12] | 11,538.61 | MEP | AC | Final F | ff |
|  | 1 | **Plumbing and Drainage Works** |  | 2015-03-31 | 2015-08-29 |  |  |  |  |  |  |  |  |  |
|  | 1 | **1st Fix** |  | 2015-03-31 | 2015-04-13 |  |  |  |  |  |  |  |  |  |
| BL1-MEP-PL-4F-1000 |  | Low Level Water Supply Pipes Installation | 12d | 2015-03-31 | 2015-04-13 | BL1-MEP-PL-3F-1000, BL1-FN-4F-1000 | 116d | 0d | Cash Flow [713.22 h]; Plumber [42 h]; Excavation [12] | 713.22 | MEP | PL & D | 1st Fix | 1f |
| BL1-MEP-PL-4F-1010 |  | Low Level Drainage Pipes Installation | 12d | 2015-03-31 | 2015-04-13 | BL1-MEP-PL-3F-1010, BL1-FN-4F-1000 | 116d | 0d | Cash Flow [2279.46 h]; Plumber [12.67 h]; Excavation [12] | 2,279.46 | MEP | PL & D | 1st Fix | 1f |
| BL1-MEP-PL-4F-1020 |  | Supports installation for High level Pipes | 12d | 2015-03-31 | 2015-04-13 | BL1-MEP-PL-3F-1020, BL1-FN-4F-1000 | 152d | 11d | Cash Flow [819.68 h]; Plumber [16.35 h]; Excavation [12] | 819.68 | MEP | PL & D | 1st Fix | 1f |
|  | 3 | **2nd Fix** |  | 2015-05-05 | 2015-07-04 |  |  |  |  |  |  |  |  |  |
| BL1-MEP-PL-4F-2000 |  | High Level Drainage Pipes Installation | 21d | 2015-05-05 | 2015-05-28 | BL1-MEP-PL-4F-1020, BL1-MEP-PL-4F-1010, BL1-FN-4F-1010, BL1-MEP-PL-3F-2000 | 134d | 2d | Cash Flow [6562.53 h]; Plumber [244.38 h]; Excavation [21] | 6,562.53 | MEP | PL & D | 2nd Fix | 2f |
| BL1-MEP-PL-4F-2010 |  | High Level Water Supply Pipes and Fittings Installation | 21d | 2015-05-05 | 2015-05-28 | BL1-MEP-PL-4F-1020, BL1-MEP-PL-4F-1000, BL1-MEP-PL-3F-2020, BL1-FN-4F-1010 | 134d | 0d | Cash Flow [1308.6 h]; Plumber [150.02 h]; Excavation [21] | 1,308.6 | MEP | PL & D | 2nd Fix | 2f |
| BL1-MEP-PL-4F-2030 |  | Water Supply Pipes Pressure Test | 6d | 2015-05-30 | 2015-06-04 | BL1-MEP-PL-4F-2010, BL1-MEP-PL-4F-1000, BL1-MEP-PL-3F-2040 | 146d | 17d | Cash Flow [145.74 h]; Plumber [48 h]; Excavation [6] | 145.74 | MEP | PL & D | 2nd Fix | 2f |
| BL1-MEP-PL-4F-1030 |  | Floor Drain Installation | 6d | 2015-06-23 | 2015-06-28 | BL1-MEP-PL-3F-2010, BL1-FN-4F-1060 | 116d | 0d | Cash Flow [548.14 h]; Plumber [6 h]; Excavation [6] | 548.14 | MEP | PL & D | 1st Fix | 2f |
| BL1-MEP-PL-4F-2020 |  | Drainage Pipes Gravity Test | 6d | 2015-06-29 | 2015-07-04 | BL1-MEP-PL-4F-2000, BL1-MEP-PL-4F-1010, BL1-MEP-PL-4F-1030, BL1-MEP-PL-3F-2030 | 116d | 0d | Cash Flow [820.24 h]; Plumber [48 h]; Excavation [6] | 820.24 | MEP | PL & D | 2nd Fix | 2f |
|  | 4 | **Final Fix** |  | 2015-08-10 | 2015-08-29 |  |  |  |  |  |  |  |  |  |
| BL1-MEP-PL-4F-3000 |  | Sanitary Ware Installation Including Connection | 14d | 2015-08-10 | 2015-08-23 | BL1-MEP-PL-4F-2030, BL1-MEP-PL-4F-2020, BL1-MEP-PL-3F-3000, BL1-FN-4F-1050, BL1-FN-4F-1060, BL1-FN-4F-1070, BL1-FN-4F-1090 | 118d | 0d | Cash Flow [4439.52 h]; Plumber [383.86 h]; Excavation [14] | 4,439.52 | MEP | PL & D | Final F | ff |
| BL1-MEP-PL-4F-3010 |  | Sanitary Ware Accessories Installation | 6d | 2015-08-24 | 2015-08-29 | BL1-MEP-PL-4F-3000, BL1-MEP-PL-3F-3010 | 134d | 0d | Cash Flow [160.22 h]; Plumber [36.45 h]; Excavation [6] | 160.22 | MEP | PL & D | Final F | ff |

| ID | WBS | Activity | Duration | Start | Finish | Predecessors | Total float | Free float | Resources | Cost | Responsibility | MEP Systems | MEP Steps | Fix |
| --- | --- | --- | --- | --- | --- | --- | --- | --- | --- | --- | --- | --- | --- | --- |
|  | 3 | **Fire Fighting Works** |  | 2015-07-27 | 2015-08-26 |  |  |  |  |  |  |  |  |  |
|  | 4 | **Final Fix** |  | 2015-07-27 | 2015-08-26 |  |  |  |  |  |  |  |  |  |
| BL1-MEP-FF-4F-3010 |  | Hose reel Cabinet Installation and Connection | 6d | 2015-07-27 | 2015-08-01 | BL1-MEP-FF-3F-3010, BL1-FN-4F-1050, BL1-FN-4F-1070 | 187d | 1d | Cash Flow [1330.85 h]; Plumber [192 h]; Excavation [6] | 1,330.85 | MEP | FF | Final F | ff |
| BL1-MEP-FF-4F-3000 |  | Fire Extinguisher Installation | 2d | 2015-08-25 | 2015-08-26 | BL1-MEP-FF-3F-3000, BL1-FN-4F-1050, BL1-FN-4F-1100 SS+1d | 170d | 21d | Cash Flow [1074.99 h]; Plumber [8 h]; Excavation [2] | 1,074.99 | MEP | FF | Final F | ff |
|  | 3 | **Electrical System** |  | 2015-03-21 | 2015-08-06 |  |  |  |  |  |  |  |  |  |
|  | 1 | **1st Fix** |  | 2015-03-21 | 2015-04-06 |  |  |  |  |  |  |  |  |  |
| BL1-MEP-EL-4F-1000 |  | PVC Back Boxes and Conduits Fixing in Wall | 12d | 2015-03-21 | 2015-04-02 | BL1-MEP-EL-3F-1000, BL1-FN-3F-1000 SS+3d, BL1-FN-4F-1000 FF+3d | 107d | 9d | Cash Flow [3307.67 h]; Electrician [384 h]; Excavation [12] | 3,307.67 | MEP | EL | 1st Fix | 1f |
| BL1-MEP-EL-4F-1010 |  | DB's Inclosure Fixing | 6d | 2015-03-31 | 2015-04-06 | BL1-MEP-EL-3F-1010, BL1-FN-4F-1000 | 122d | 6d | Cash Flow [2130.4 h]; Electrician [96 h]; Excavation [6] | 2,130.4 | MEP | EL | 1st Fix | 1f |
|  | 2 | **2nd Fix** |  | 2015-05-05 | 2015-06-18 |  |  |  |  |  |  |  |  |  |
| BL1-MEP-EL-4F-2000 |  | Cable Tray and Trunking Installation | 14d | 2015-05-05 | 2015-05-20 | BL1-MEP-EL-3F-2000, BL1-FN-4F-1010 | 159d | 9d | Cash Flow [9064.45 h]; Electrician [336 h]; Excavation [14] | 9,064.45 | MEP | EL | 2nd Fix | 2f |
| BL1-MEP-EL-4F-2010 |  | Fire Alarm System Wiring | 12d | 2015-05-05 | 2015-05-18 | BL1-MEP-EL-4F-1000, BL1-MEP-EL-3F-2010, BL1-FN-4F-1010 | 161d | 11d | Cash Flow [7111.01 h]; Electrician [192 h]; Excavation [12] | 7,111.01 | MEP | EL | 2nd Fix | 2f |
| BL1-MEP-EL-4F-2020 |  | Low Current System Wiring | 14d | 2015-05-05 | 2015-05-20 | BL1-MEP-EL-4F-1000, BL1-FN-4F-1010 | 221d | 49d | Cash Flow [38217.8 h]; Electrician [244 h]; Excavation [14] | 38,217.78 | MEP | EL |  | 2f |
| BL1-MEP-EL-4F-2040 |  | Lighting Wiring | 12d | 2015-05-05 | 2015-05-18 | BL1-MEP-EL-4F-1000, BL1-MEP-EL-3F-2040, BL1-FN-4F-1010 | 161d | 11d | Cash Flow [3566.08 h]; Electrician [241.71 h]; Excavation [12] | 3,566.08 | MEP | EL | 2nd Fix | 2f |
| BL1-MEP-EL-4F-2050 |  | Power Points Wiring | 12d | 2015-05-05 | 2015-05-18 | BL1-MEP-EL-4F-1000, BL1-MEP-EL-3F-2050, BL1-FN-4F-1010 | 149d | 3d | Cash Flow [2894.21 h]; Electrician [192 h]; Excavation [12] | 2,894.21 | MEP | EL | 2nd Fix | 2f |
| BL1-MEP-EL-4F-2060 |  | Emergency Light Wiring | 8d | 2015-05-05 | 2015-05-13 | BL1-MEP-EL-4F-1000, BL1-MEP-EL-3F-2060, BL1-FN-4F-1010 | 165d | 15d | Cash Flow [1202.03 h]; Electrician [128 h]; Excavation [8] | 1,202.03 | MEP | EL | 2nd Fix | 2f |
| BL1-MEP-EL-4F-2030 |  | SMDB's Installation | 6d | 2015-05-23 | 2015-05-28 | BL1-MEP-EL-4F-1000, BL1-FN-4F-1020, BL1-MEP-EL-3F-2030 | 231d | 17d | Cash Flow [4196.6 h]; Electrician [45 h]; Excavation [6] | 4,196.6 | MEP | EL | 2nd Fix | 2f |
| BL1-MEP-EL-4F-2070 |  | DB's Installation and Termination | 12d | 2015-05-23 | 2015-06-04 | BL1-MEP-EL-4F-1010, BL1-MEP-EL-3F-2070, BL1-MEP-EL-4F-2050, BL1-FN-4F-1020 | 146d | 0d | Cash Flow [4970.93 h]; Electrician [288 h]; Excavation [12] | 4,970.93 | MEP | EL | 2nd Fix | 2f |
| BL1-MEP-EL-4F-3060 |  | Power Cable Puling | 14d | 2015-06-05 | 2015-06-18 | BL1-MEP-EL-4F-2000, BL1-MEP-EL-4F-2040, BL1-MEP-EL-4F-2050, BL1-MEP-EL-3F-3060, BL1-MEP-EL-4F-2070 | 172d | 9d | Cash Flow [6361.76 h]; Electrician [168 h]; Excavation [14] | 6,361.76 | MEP | EL | 2nd Fix | 2f |
|  | 3 | **Final Fix** |  | 2015-07-11 | 2015-08-06 |  |  |  |  |  |  |  |  |  |
| BL1-MEP-EL-4F-3000 |  | Emergency Light Fixing | 8d | 2015-07-11 | 2015-07-18 | BL1-MEP-EL-4F-2060, BL1-FN-4F-1070, BL1-MEP-EL-3F-3000 | 200d | 15d | Cash Flow [5714.02 h]; Electrician [128 h]; Excavation [8] | 5,714.02 | MEP | EL | Final F | ff |
| BL1-MEP-EL-4F-3010 |  | Fire Alarm System Detector Installation | 12d | 2015-07-11 | 2015-07-22 | BL1-MEP-EL-4F-2010, BL1-FN-4F-1070, BL1-MEP-EL-3F-3010 | 176d | 11d | Cash Flow [4034.38 h]; Electrician [192 h]; Excavation [12] | 4,034.38 | MEP | EL | Final F | ff |
| BL1-MEP-EL-4F-3030 |  | Despature for Low Current System Installation | 14d | 2015-07-11 | 2015-07-24 | BL1-MEP-EL-4F-2020, BL1-MEP-EL-3F-3030, BL1-FN-4F-1020, BL1-FN-4F-1070 | 172d | 0d | Cash Flow [72738.2 h]; Electrician [336 h]; Excavation [14] | 72,738.16 | MEP | EL |  | ff |
| BL1-MEP-EL-4F-3050 |  | Sockets and Switches Fixing | 8d | 2015-07-11 | 2015-07-18 | BL1-MEP-EL-4F-2050, BL1-FN-4F-1070, BL1-MEP-EL-3F-3050 | 192d | 15d | Cash Flow [1166.96 h]; Electrician [128 h]; Excavation [8] | 1,166.96 | MEP | EL | Final F | ff |
| BL1-MEP-EL-4F-3070 |  | SMDB's Termination and Final Connection | 6d | 2015-07-11 | 2015-07-16 | BL1-MEP-EL-4F-2030, BL1-MEP-EL-3F-3070, BL1-MEP-EL-4F-3060, BL1-FN-4F-1070 | 189d | 17d | Cash Flow [2785.83 h]; Electrician [192 h]; Excavation [6] | 2,785.82 | MEP | EL | Final F | ff |
| BL1-MEP-EL-4F-3020 |  | Lights Fitting Fixing | 14d | 2015-07-24 | 2015-08-06 | BL1-MEP-EL-4F-2040, BL1-FN-4F-1070, BL1-MEP-EL-3F-3020 | 155d | 0d | Cash Flow [7322.66 h]; Electrician [244 h]; Excavation [14] | 7,322.66 | MEP | EL | Final F | ff |
| BL1-MEP-EL-4F-3040 |  | Low Current System Outlet installation and Connection | 10d | 2015-07-25 | 2015-08-03 | BL1-MEP-EL-4F-2020, BL1-MEP-EL-4F-3030, BL1-FN-4F-1020, BL1-FN-4F-1070 | 196d | 26d | Cash Flow [3860.79 h]; Electrician [80 h]; Excavation [10] | 3,860.79 | MEP | EL |  | ff |

| ID | WBS | Activity | Duration | Start | Finish | Predecessors | Total float | Free float | Resources | Cost | Structural | Responsibility | MEP Systems | MEP Steps | Finishing | Fix |
| --- | --- | --- | --- | --- | --- | --- | --- | --- | --- | --- | --- | --- | --- | --- | --- | --- |
|  | 8 | **5th Floor** |  | 2015-01-12 | 2015-09-25 |  |  |  |  |  |  |  |  |  |  |  |
|  | 1 | **Structural** |  | 2015-01-12 | 2015-02-08 |  |  |  |  |  |  |  |  |  |  |  |
| BL1-ST-5F-1000 |  | Reinforcement for Verticals | 8d | 2015-01-12 | 2015-01-20 | ENG-STR-BL1-APP270, ENG-STR-BL1-APP280, BL1-ST-4F-1070 | 57.5d | 0d | MNHRS [644.34 h]; Cash Flow [43079.3 h]; Reinforcement [34189.9]; Excavation [8] | 43,079.3 | STR |  |  |  |  |  |
| BL1-ST-5F-1010 |  | MEP Works in Vertical Element | 5d | 2015-01-15 | 2015-01-20 | ENGMEP8640, BL1-ST-5F-1000 FF | 61.5d | 4d | Cash Flow [1798.55 h]; Electrician [160 h]; Excavation [5] | 1,798.55 |  | MEP | EL | B.W |  |  |
| BL1-ST-5F-1020 |  | FW for Verticals | 4d | 2015-01-21 | 2015-01-25 | BL1-ST-5F-1000 | 57.5d | 0d | MNHRS [7977.59 h]; Cash Flow [35073 h]; FW [1126.3]; Excavation [4] | 35,072.98 | STR |  |  |  |  |  |
| BL1-ST-5F-1030 |  | Concrete Verticals | 1d | 2015-01-26 | 2015-01-26 | BL1-ST-5F-1020, BL1-ST-5F-1010 | 57.5d | 0d | MNHRS [1383.9 h]; Cash Flow [23230.5 h]; Concrete [168.3]; Excavation [1] | 23,230.45 | STR |  |  |  |  |  |
| BL1-ST-5F-1040 |  | FW for Slab | 5d | 2015-01-27 | 2015-02-01 | BL1-ST-5F-1030 | 57.5d | 0d | MNHRS [11871.1 h]; Cash Flow [52190.6 h]; FW [1676]; Excavation [5] | 52,190.64 | STR |  |  |  |  |  |
| BL1-ST-5F-1050 |  | Reinforcement for Slab | 5d | 2015-02-02 | 2015-02-07 | BL1-ST-5F-1040 | 57.5d | 0d | MNHRS [1189.26 h]; Cash Flow [79511.8 h]; Reinforcement [63104.5]; Excavation [5] | 79,511.76 | STR |  |  |  |  |  |
| BL1-ST-5F-1060 |  | MEP Works in Slab & Beams | 5d | 2015-02-02 | 2015-02-07 | ENGMEP8640, BL1-ST-5F-1050 FF | 57.5d | 0d | Cash Flow [3349.02 h]; Electrician [320 h]; Excavation [5] | 3,349.02 |  | MEP | EL | B.W |  |  |
| BL1-ST-5F-1070 |  | Concrete for Slab | 1d | 2015-02-08 | 2015-02-08 | BL1-ST-5F-1050, BL1-ST-5F-1060 | 57.5d | 0d | MNHRS [3063.82 h]; Cash Flow [51430 h]; Concrete [372.6]; Excavation [1] | 51,429.98 | STR |  |  |  |  |  |
|  | 2 | **Fiishing** |  | 2015-04-04 | 2015-09-25 |  |  |  |  |  |  |  |  |  |  |  |
| BL1-FN-5F-1000 |  | Block Works | 20d | 2015-04-04 | 2015-04-26 | BL1-ST-6F-1070 FS+12d, BL1-ST-7F-1070 | 96d | 0d | Cash Flow [26434.9 h]; MNHRS [1988 h]; BW [519]; Excavation [20] | 26,434.94 |  |  |  |  | FIN |  |
| BL1-FN-5F-1010 |  | Plaster | 18d | 2015-05-11 | 2015-05-31 | BL1-FN-5F-1000, BL1-MEP-PL-5F-1000, BL1-MEP-PL-5F-1010, BL1-MEP-EL-5F-1000, BL1-MEP-EL-5F-1010 | 108d | 0d | MNHRS [2245.5 h]; Cash Flow [26392 h]; Plaster [749]; Excavation [18] | 26,392.04 |  |  |  |  | FIN |  |
| BL1-FN-5F-1020 |  | Paint 1st Coat | 15d | 2015-06-01 | 2015-06-15 | BL1-FN-5F-1010 | 108d | 0d | MNHRS [674 h]; Cash Flow [4064.48 h]; Painting [749]; Excavation [15] | 4,064.48 |  |  |  |  | FIN |  |
| BL1-FN-5F-1030 |  | Ceiling Paint | 10d | 2015-06-11 | 2015-06-20 | BL1-FN-5F-1020 SS+10d | 108d | 0d | MNHRS [26.6 h]; Cash Flow [160.32 h]; Painting [30]; Excavation [10] | 160.32 |  |  |  |  | FIN |  |
| BL1-FN-5F-1040 |  | Waterproofing | 5d | 2015-06-21 | 2015-06-25 | BL1-FN-5F-1030 | 108d | 0d | MNHRS [6.9 h]; Cash Flow [131.19 h]; Waterproofing [23]; Excavation [5] | 131.19 |  |  |  |  | FIN |  |
| BL1-FN-5F-1050 |  | Wall Tiling | 10d | 2015-06-21 | 2015-06-30 | BL1-FN-5F-1030 | 126d | 18d | MNHRS [1184 h]; Cash Flow [5254.47 h]; Tiling [118.4]; Excavation [10] | 5,254.47 |  |  |  |  | FIN |  |
| BL1-FN-5F-1060 |  | Flooring Works | 20d | 2015-06-26 | 2015-07-15 | BL1-FN-5F-1040 | 108d | 0d | MNHRS [1346 h]; Cash Flow [31373.1 h]; Tiling [205]; Excavation [20] | 31,373.06 |  |  |  |  | FIN |  |
| BL1-FN-5F-1070 |  | False Ceiling | 15d | 2015-07-19 | 2015-08-02 | BL1-FN-5F-1050, BL1-MEP-AC-5F-2060 FF+6d, BL1-MEP-PL-5F-2030 FF+6d, BL1-MEP-PL-5F-2020 FF+6d, BL1-MEP-AC-5F-2070 FF+6d, BL1-MEP-EL-5F-2060 FF+6d, BL1-MEP-EL-5F-2030 FF+6d, BL1-MEP-EL-5F-2040 FF+6d, BL1-MEP-EL-5F-2000 FF+6d, BL1-MEP-EL-5F-2010 FF+6d, BL1-MEP-EL-5F-2070 FF+6d | 108d | 0d | Cash Flow [49060 h]; False Ceiling [1231]; MNHRS [5855 h]; Excavation [15] | 49,060 |  |  |  |  | FIN |  |
| BL1-FN-5F-1080 |  | Hand Rails for Stairs | 15d | 2015-08-03 | 2015-08-17 | BL1-FN-5F-1070 | 108d | 0d | Cash Flow [9483.79 h]; Metal Works & Handrail [20]; MNHRS [43 h]; Excavation [15] | 9,483.79 |  |  |  |  | FIN |  |
| BL1-FN-5F-1090 |  | Doors Installation | 15d | 2015-08-18 | 2015-09-01 | BL1-FN-5F-1080, BL1-FN-4F-1090 | 108d | 0d | Cash Flow [31765.1 h]; Excavation [15] | 31,765.06 |  |  |  |  | FIN |  |
| BL1-FN-5F-1100 |  | Final Paint | 10d | 2015-09-16 | 2015-09-25 | BL1-FN-5F-1060, BL1-MEP-AC-5F-3000 FF+4d, BL1-MEP-EL-5F-3040 FF+4d, BL1-MEP-EL-5F-3000 FF+4d, BL1-MEP-EL-5F-3020 FF+4d, BL1-MEP-EL-5F-3010 FF+4d, BL1-MEP-EL-5F-3050 FF+4d, BL1-MEP-PL-5F-3000 FF+4d, BL1-MEP-PL-5F-3010 FF+4d, BL1-MEP-FF-5F-3010 FF+4d, BL1-MEP-EL-5F-3070 FF+4d, BL1-MEP-EL-5F-3030 FF+4d | 149d | 0d | Excavation [10] |  |  |  |  |  | FIN |  |
|  | 9 | **MEP Work** |  | 2015-04-16 | 2015-09-21 |  |  |  |  |  |  |  |  |  |  |  |
|  | 1 | **Mechanical System** |  | 2015-04-27 | 2015-09-21 |  |  |  |  |  |  |  |  |  |  |  |
|  | 2 | **HVAC Works** |  | 2015-04-27 | 2015-08-14 |  |  |  |  |  |  |  |  |  |  |  |
|  | 1 | **1st Fix** |  | 2015-04-27 | 2015-05-10 |  |  |  |  |  |  |  |  |  |  |  |
| BL1-MEP-AC-5F-1000 |  | Supports and Hungers Fixing | 12d | 2015-04-27 | 2015-05-10 | BL1-MEP-AC-4F-1000, BL1-FN-5F-1000 | 141d | 0d | Cash Flow [326.47 h]; Ductman [192 h]; Excavation [12] | 326.47 |  | MEP | AC | 1st Fix |  | 1f |

| ID | WBS | Activity | Duration | Start | Finish | Predecessors | Total float | Free float | Resources | Cost | Responsibility | MEP Systems | MEP Steps | Fix |
| --- | --- | --- | --- | --- | --- | --- | --- | --- | --- | --- | --- | --- | --- | --- |
|  | 3 | **2nd Fix** |  | 2015-06-01 | 2015-07-09 |  |  |  |  |  |  |  |  |  |
| BL1-MEP-AC-5F-2000 |  | Chilled Water Pipes and Fittings Installation | 21d | 2015-06-01 | 2015-06-21 | BL1-MEP-AC-5F-1000, BL1-MEP-AC-4F-2000, BL1-FN-5F-1010 | 123d | 0d | Cash Flow [5230.19 h]; Pipe Fitter - CHW [840 h]; Excavation [21] | 5,230.19 | MEP | AC | 2nd Fix | 2f |
| BL1-MEP-AC-5F-2010 |  | FCU's Installation | 8d | 2015-06-01 | 2015-06-08 | BL1-MEP-AC-5F-1000, BL1-MEP-AC-4F-2020, BL1-FN-5F-1010 | 148d | 2d | Cash Flow [5992.06 h]; Pipe Fitter - CHW [192 h]; Excavation [8] | 5,992.06 | MEP | AC | 2nd Fix | 2f |
| BL1-MEP-AC-5F-2020 |  | Duct Installation and Insulation | 21d | 2015-06-01 | 2015-06-21 | BL1-MEP-AC-5F-1000, BL1-MEP-AC-4F-2010, BL1-FN-5F-1010 | 124d | 0d | Cash Flow [4329.94 h]; Ductman [263 h]; Excavation [21] | 4,329.94 | MEP | AC | 2nd Fix | 2f |
| BL1-MEP-AC-5F-2030 |  | Chilled Water Pipes Pressure Test | 6d | 2015-06-22 | 2015-06-27 | BL1-MEP-AC-5F-2000 | 129d | 0d | Cash Flow [581.12 h]; Pipe Fitter - CHW [96 h]; Excavation [6] | 581.12 | MEP | AC | 2nd Fix | 2f |
| BL1-MEP-AC-5F-2070 |  | Duct Accessories Installation | 14d | 2015-06-22 | 2015-07-05 | BL1-MEP-AC-5F-2020, BL1-MEP-AC-4F-2070 | 130d | 7d | Cash Flow [652.97 h]; Pipe Fitter - CHW [448 h]; Excavation [14] | 652.97 | MEP | AC | 2nd Fix | 2f |
| BL1-MEP-AC-5F-2040 |  | Chilled Water Pipes Insulation | 12d | 2015-06-28 | 2015-07-09 | BL1-MEP-AC-5F-2030, BL1-MEP-AC-4F-2040 | 192d | 9d | Cash Flow [1658.21 h]; Pipe Fitter - CHW [384 h]; Excavation [12] | 1,658.21 | MEP | AC | 2nd Fix | 2f |
| BL1-MEP-AC-5F-2050 |  | Valve Package Installation | 6d | 2015-06-28 | 2015-07-03 | BL1-MEP-AC-5F-2010, BL1-MEP-AC-5F-2030 | 129d | 0d | Cash Flow [2380.49 h]; Pipe Fitter - CHW [96 h]; Excavation [6] | 2,380.49 | MEP | AC | 2nd Fix | 2f |
| BL1-MEP-AC-5F-2060 |  | FCU's Drain Pipes Installation | 3d | 2015-07-04 | 2015-07-06 | BL1-MEP-AC-5F-2010, BL1-MEP-AC-5F-2050, BL1-MEP-AC-4F-2060 | 129d | 18d | Cash Flow [516.93 h]; Pipe Fitter - CHW [48 h]; Excavation [3] | 516.93 | MEP | AC | 2nd Fix | 2f |
|  | 4 | **Final Fix** |  | 2015-08-03 | 2015-08-14 |  |  |  |  |  |  |  |  |  |
| BL1-MEP-AC-5F-3000 |  | Grills and Diffusers Fixing | 12d | 2015-08-03 | 2015-08-14 | BL1-MEP-AC-5F-2070, BL1-MEP-AC-4F-3000, BL1-FN-5F-1070 | 174d | 0d | Cash Flow [11538.6 h]; Ductman [384 h]; Excavation [12] | 11,538.61 | MEP | AC | Final F | ff |
|  | 1 | **Plumbing and Drainage Works** |  | 2015-04-27 | 2015-09-21 |  |  |  |  |  |  |  |  |  |
|  | 1 | **1st Fix** |  | 2015-04-27 | 2015-05-10 |  |  |  |  |  |  |  |  |  |
| BL1-MEP-PL-5F-1000 |  | Low Level Water Supply Pipes Installation | 12d | 2015-04-27 | 2015-05-10 | BL1-MEP-PL-4F-1000, BL1-FN-5F-1000 | 108d | 0d | Cash Flow [713.22 h]; Plumber [42 h]; Excavation [12] | 713.22 | MEP | PL & D | 1st Fix | 1f |
| BL1-MEP-PL-5F-1010 |  | Low Level Drainage Pipes Installation | 12d | 2015-04-27 | 2015-05-10 | BL1-MEP-PL-4F-1010, BL1-FN-5F-1000 | 108d | 0d | Cash Flow [2279.46 h]; Plumber [12.67 h]; Excavation [12] | 2,279.46 | MEP | PL & D | 1st Fix | 1f |
| BL1-MEP-PL-5F-1020 |  | Supports installation for High level Pipes | 12d | 2015-04-27 | 2015-05-10 | BL1-MEP-PL-4F-1020, BL1-FN-5F-1000 | 150d | 0d | Cash Flow [819.68 h]; Plumber [16.35 h]; Excavation [12] | 819.68 | MEP | PL & D | 1st Fix | 1f |
|  | 3 | **2nd Fix** |  | 2015-06-01 | 2015-07-27 |  |  |  |  |  |  |  |  |  |
| BL1-MEP-PL-5F-2000 |  | High Level Drainage Pipes Installation | 21d | 2015-06-01 | 2015-06-21 | BL1-MEP-PL-5F-1020, BL1-MEP-PL-5F-1010, BL1-FN-5F-1010, BL1-MEP-PL-4F-2000 | 132d | 0d | Cash Flow [6562.53 h]; Plumber [244.38 h]; Excavation [21] | 6,562.53 | MEP | PL & D | 2nd Fix | 2f |
| BL1-MEP-PL-5F-2010 |  | High Level Water Supply Pipes and Fittings Installation | 21d | 2015-06-01 | 2015-06-21 | BL1-MEP-PL-5F-1020, BL1-MEP-PL-5F-1000, BL1-MEP-PL-4F-2010, BL1-FN-5F-1010 | 132d | 0d | Cash Flow [1308.6 h]; Plumber [150.02 h]; Excavation [21] | 1,308.6 | MEP | PL & D | 2nd Fix | 2f |
| BL1-MEP-PL-5F-2030 |  | Water Supply Pipes Pressure Test | 6d | 2015-06-22 | 2015-06-27 | BL1-MEP-PL-5F-2010, BL1-MEP-PL-5F-1000, BL1-MEP-PL-4F-2030 | 138d | 15d | Cash Flow [145.74 h]; Plumber [48 h]; Excavation [6] | 145.74 | MEP | PL & D | 2nd Fix | 2f |
| BL1-MEP-PL-5F-1030 |  | Floor Drain Installation | 6d | 2015-07-16 | 2015-07-21 | BL1-MEP-PL-4F-1030, BL1-FN-5F-1060 | 108d | 0d | Cash Flow [548.14 h]; Plumber [6 h]; Excavation [6] | 548.14 | MEP | PL & D | 1st Fix | 2f |
| BL1-MEP-PL-5F-2020 |  | Drainage Pipes Gravity Test | 6d | 2015-07-22 | 2015-07-27 | BL1-MEP-PL-5F-2000, BL1-MEP-PL-5F-1010, BL1-MEP-PL-5F-1030, BL1-MEP-PL-4F-2020 | 108d | 0d | Cash Flow [820.24 h]; Plumber [48 h]; Excavation [6] | 820.24 | MEP | PL & D | 2nd Fix | 2f |
|  | 4 | **Final Fix** |  | 2015-09-02 | 2015-09-21 |  |  |  |  |  |  |  |  |  |
| BL1-MEP-PL-5F-3000 |  | Sanitary Ware Installation Including Connection | 14d | 2015-09-02 | 2015-09-15 | BL1-MEP-PL-5F-2030, BL1-MEP-PL-5F-2020, BL1-MEP-PL-4F-3000, BL1-FN-5F-1060, BL1-FN-5F-1050, BL1-FN-5F-1070, BL1-FN-5F-1090 | 109d | 0d | Cash Flow [4439.52 h]; Plumber [383.86 h]; Excavation [14] | 4,439.52 | MEP | PL & D | Final F | ff |
| BL1-MEP-PL-5F-3010 |  | Sanitary Ware Accessories Installation | 6d | 2015-09-16 | 2015-09-21 | BL1-MEP-PL-5F-3000, BL1-MEP-PL-4F-3010 | 117d | 0d | Cash Flow [160.22 h]; Plumber [36.45 h]; Excavation [6] | 160.22 | MEP | PL & D | Final F | ff |

| ID | WBS | Activity | Duration | Start | Finish | Predecessors | Total float | Free float | Resources | Cost | Responsibility | MEP Systems | MEP Steps | Fix |
| --- | --- | --- | --- | --- | --- | --- | --- | --- | --- | --- | --- | --- | --- | --- |
|  | 3 | **Fire Fighting Works** |  | 2015-08-03 | 2015-09-18 |  |  |  |  |  |  |  |  |  |
|  | 4 | **Final Fix** |  | 2015-08-03 | 2015-09-18 |  |  |  |  |  |  |  |  |  |
| BL1-MEP-FF-5F-3010 |  | Hose reel Cabinet Installation and Connection | 6d | 2015-08-03 | 2015-08-08 | BL1-MEP-FF-4F-3010, BL1-FN-5F-1050, BL1-FN-5F-1070 | 186d | 4d | Cash Flow [1330.85 h]; Plumber [192 h]; Excavation [6] | 1,330.85 | MEP | FF | Final F | ff |
| BL1-MEP-FF-5F-3000 |  | Fire Extinguisher Installation | 2d | 2015-09-17 | 2015-09-18 | BL1-MEP-FF-4F-3000, BL1-FN-5F-1050, BL1-FN-5F-1100 SS+1d | 149d | 13d | Cash Flow [1074.99 h]; Plumber [8 h]; Excavation [2] | 1,074.99 | MEP | FF | Final F | ff |
|  | 3 | **Electrical System** |  | 2015-04-16 | 2015-08-26 |  |  |  |  |  |  |  |  |  |
|  | 1 | **1st Fix** |  | 2015-04-16 | 2015-05-03 |  |  |  |  |  |  |  |  |  |
| BL1-MEP-EL-5F-1000 |  | PVC Back Boxes and Conduits Fixing in Wall | 12d | 2015-04-16 | 2015-04-29 | BL1-MEP-EL-4F-1000, BL1-FN-3F-1000 SS+3d, BL1-FN-5F-1000 FF+3d | 96d | 0d | Cash Flow [3307.67 h]; Electrician [384 h]; Excavation [12] | 3,307.67 | MEP | EL | 1st Fix | 1f |
| BL1-MEP-EL-5F-1010 |  | DB's Inclosure Fixing | 6d | 2015-04-27 | 2015-05-03 | BL1-MEP-EL-4F-1010, BL1-FN-5F-1000 | 114d | 6d | Cash Flow [2130.4 h]; Electrician [96 h]; Excavation [6] | 2,130.4 | MEP | EL | 1st Fix | 1f |
|  | 2 | **2nd Fix** |  | 2015-06-01 | 2015-07-11 |  |  |  |  |  |  |  |  |  |
| BL1-MEP-EL-5F-2000 |  | Cable Tray and Trunking Installation | 14d | 2015-06-01 | 2015-06-14 | BL1-MEP-EL-4F-2000, BL1-FN-5F-1010 | 151d | 0d | Cash Flow [9064.45 h]; Electrician [336 h]; Excavation [14] | 9,064.45 | MEP | EL | 2nd Fix | 2f |
| BL1-MEP-EL-5F-2010 |  | Fire Alarm System Wiring | 12d | 2015-06-01 | 2015-06-12 | BL1-MEP-EL-5F-1000, BL1-MEP-EL-4F-2010, BL1-FN-5F-1010 | 153d | 0d | Cash Flow [7111.01 h]; Electrician [192 h]; Excavation [12] | 7,111.01 | MEP | EL | 2nd Fix | 2f |
| BL1-MEP-EL-5F-2020 |  | Low Current System Wiring | 14d | 2015-06-01 | 2015-06-14 | BL1-MEP-EL-5F-1000, BL1-FN-5F-1010 | 212d | 49d | Cash Flow [38217.8 h]; Electrician [244 h]; Excavation [14] | 38,217.78 | MEP | EL |  | 2f |
| BL1-MEP-EL-5F-2030 |  | Lighting Wiring | 12d | 2015-06-01 | 2015-06-12 | BL1-MEP-EL-5F-1000, BL1-MEP-EL-4F-2040, BL1-FN-5F-1010 | 153d | 0d | Cash Flow [3566.08 h]; Electrician [241.71 h]; Excavation [12] | 3,566.08 | MEP | EL | 2nd Fix | 2f |
| BL1-MEP-EL-5F-2040 |  | Power Points Wiring | 12d | 2015-06-01 | 2015-06-12 | BL1-MEP-EL-5F-1000, BL1-MEP-EL-4F-2050, BL1-FN-5F-1010 | 141d | 0d | Cash Flow [2894.21 h]; Electrician [192 h]; Excavation [12] | 2,894.21 | MEP | EL | 2nd Fix | 2f |
| BL1-MEP-EL-5F-2060 |  | Emergency Light Wiring | 8d | 2015-06-01 | 2015-06-08 | BL1-MEP-EL-5F-1000, BL1-MEP-EL-4F-2060, BL1-FN-5F-1010 | 157d | 2d | Cash Flow [1202.03 h]; Electrician [128 h]; Excavation [8] | 1,202.03 | MEP | EL | 2nd Fix | 2f |
| BL1-MEP-EL-5F-2050 |  | SMDB's Installation | 6d | 2015-06-16 | 2015-06-21 | BL1-MEP-EL-5F-1000, BL1-FN-5F-1020, BL1-MEP-EL-4F-2030 | 214d | 4d | Cash Flow [4196.6 h]; Electrician [45 h]; Excavation [6] | 4,196.6 | MEP | EL | 2nd Fix | 2f |
| BL1-MEP-EL-5F-2070 |  | DB's Installation and Termination | 12d | 2015-06-16 | 2015-06-27 | BL1-MEP-EL-5F-1010, BL1-MEP-EL-4F-2070, BL1-MEP-EL-5F-2040, BL1-FN-5F-1020 | 138d | 0d | Cash Flow [4970.93 h]; Electrician [288 h]; Excavation [12] | 4,970.93 | MEP | EL | 2nd Fix | 2f |
| BL1-MEP-EL-5F-3060 |  | Power Cable Puling | 14d | 2015-06-28 | 2015-07-11 | BL1-MEP-EL-5F-2000, BL1-MEP-EL-5F-2030, BL1-MEP-EL-5F-2040, BL1-MEP-EL-4F-3060, BL1-MEP-EL-5F-2070 | 163d | 0d | Cash Flow [6361.76 h]; Electrician [168 h]; Excavation [14] | 6,361.76 | MEP | EL | 2nd Fix | 2f |
|  | 3 | **Final Fix** |  | 2015-08-03 | 2015-08-26 |  |  |  |  |  |  |  |  |  |
| BL1-MEP-EL-5F-3000 |  | Emergency Light Fixing | 8d | 2015-08-03 | 2015-08-10 | BL1-MEP-EL-5F-2060, BL1-FN-5F-1070, BL1-MEP-EL-4F-3000 | 185d | 2d | Cash Flow [5714.02 h]; Electrician [128 h]; Excavation [8] | 5,714.02 | MEP | EL | Final F | ff |
| BL1-MEP-EL-5F-3010 |  | Fire Alarm System Detector Installation | 12d | 2015-08-03 | 2015-08-14 | BL1-MEP-EL-5F-2010, BL1-FN-5F-1070, BL1-MEP-EL-4F-3010 | 165d | 0d | Cash Flow [4034.38 h]; Electrician [192 h]; Excavation [12] | 4,034.38 | MEP | EL | Final F | ff |
| BL1-MEP-EL-5F-3030 |  | Despature for Low Current System Installation | 14d | 2015-08-03 | 2015-08-16 | BL1-MEP-EL-5F-2020, BL1-MEP-EL-4F-3030, BL1-FN-5F-1020, BL1-FN-5F-1070 | 163d | 0d | Cash Flow [72738.2 h]; Electrician [336 h]; Excavation [14] | 72,738.16 | MEP | EL |  | ff |
| BL1-MEP-EL-5F-3050 |  | Sockets and Switches Fixing | 8d | 2015-08-03 | 2015-08-10 | BL1-MEP-EL-5F-2040, BL1-FN-5F-1070, BL1-MEP-EL-4F-3050 | 177d | 2d | Cash Flow [1166.96 h]; Electrician [128 h]; Excavation [8] | 1,166.96 | MEP | EL | Final F | ff |
| BL1-MEP-EL-5F-3070 |  | SMDB's Termination and Final Connection | 6d | 2015-08-03 | 2015-08-08 | BL1-MEP-EL-5F-2050, BL1-MEP-EL-4F-3070, BL1-MEP-EL-5F-3060, BL1-FN-5F-1070 | 172d | 4d | Cash Flow [2785.83 h]; Electrician [192 h]; Excavation [6] | 2,785.82 | MEP | EL | Final F | ff |
| BL1-MEP-EL-5F-3020 |  | Lights Fitting Fixing | 14d | 2015-08-07 | 2015-08-20 | BL1-MEP-EL-5F-2030, BL1-FN-5F-1070, BL1-MEP-EL-4F-3020 | 155d | 0d | Cash Flow [7322.66 h]; Electrician [244 h]; Excavation [14] | 7,322.66 | MEP | EL | Final F | ff |
| BL1-MEP-EL-5F-3040 |  | Low Current System Outlet installation and Connection | 10d | 2015-08-17 | 2015-08-26 | BL1-MEP-EL-5F-2020, BL1-MEP-EL-5F-3030, BL1-FN-5F-1020 | 175d | 26d | Cash Flow [3860.79 h]; Electrician [80 h]; Excavation [10] | 3,860.79 | MEP | EL |  | ff |

| ID | WBS | Activity | Duration | Start | Finish | Predecessors | Total float | Free float | Resources | Cost | Structural | Responsibility | MEP Systems | MEP Steps | Finishing | Fix |
| --- | --- | --- | --- | --- | --- | --- | --- | --- | --- | --- | --- | --- | --- | --- | --- | --- |
|  | 9 | **6th Floor** |  | 2015-02-09 | 2015-10-10 |  |  |  |  |  |  |  |  |  |  |  |
|  | 1 | **Structural** |  | 2015-02-09 | 2015-03-07 |  |  |  |  |  |  |  |  |  |  |  |
| BL1-ST-6F-1000 |  | Reinforcement for Verticals | 7d | 2015-02-09 | 2015-02-16 | ENG-STR-BL1-APP290, ENG-STR-BL1-APP300, BL1-ST-5F-1070 | 57.5d | 0d | MNHRS [644.34 h]; Cash Flow [43079.3 h]; Reinforcement [34189.9]; Excavation [7] | 43,079.3 | STR |  |  |  |  |  |
| BL1-ST-6F-1010 |  | MEP Works in Vertical Element | 5d | 2015-02-11 | 2015-02-16 | ENGMEP8640, BL1-ST-6F-1000 FF | 61.5d | 4d | Cash Flow [1798.55 h]; Electrician [160 h]; Excavation [5] | 1,798.55 |  | MEP | EL | B.W |  |  |
| BL1-ST-6F-1020 |  | FW for Verticals | 4d | 2015-02-17 | 2015-02-21 | BL1-ST-6F-1000 | 57.5d | 0d | MNHRS [7977.59 h]; Cash Flow [35073 h]; FW [1126.3]; Excavation [4] | 35,072.98 | STR |  |  |  |  |  |
| BL1-ST-6F-1030 |  | Concrete Verticals | 1d | 2015-02-22 | 2015-02-22 | BL1-ST-6F-1020, BL1-ST-6F-1010 | 57.5d | 0d | MNHRS [1383.9 h]; Cash Flow [23230.5 h]; Concrete [168.3]; Excavation [1] | 23,230.45 | STR |  |  |  |  |  |
| BL1-ST-6F-1040 |  | FW for Slab | 5d | 2015-02-23 | 2015-02-28 | BL1-ST-6F-1030 | 57.5d | 0d | MNHRS [11871.1 h]; Cash Flow [52190.6 h]; FW [1676]; Excavation [5] | 52,190.64 | STR |  |  |  |  |  |
| BL1-ST-6F-1050 |  | Reinforcement for Slab | 5d | 2015-03-01 | 2015-03-05 | BL1-ST-6F-1040 | 57.5d | 0d | MNHRS [1189.26 h]; Cash Flow [79511.8 h]; Reinforcement [63104.5]; Excavation [5] | 79,511.76 | STR |  |  |  |  |  |
| BL1-ST-6F-1060 |  | MEP Works in Slab & Beams | 5d | 2015-03-01 | 2015-03-05 | ENGMEP8640, BL1-ST-6F-1050 FF | 57.5d | 0d | Cash Flow [3349.02 h]; Electrician [320 h]; Excavation [5] | 3,349.02 |  | MEP | EL | B.W |  |  |
| BL1-ST-6F-1070 |  | Concrete for Slab | 1d | 2015-03-07 | 2015-03-07 | BL1-ST-6F-1050, BL1-ST-6F-1060 | 57.5d | 0d | MNHRS [3063.82 h]; Cash Flow [51430 h]; Concrete [372.6]; Excavation [1] | 51,429.98 | STR |  |  |  |  |  |
|  | 2 | **Fiishing** |  | 2015-04-20 | 2015-10-10 |  |  |  |  |  |  |  |  |  |  |  |
| BL1-FN-6F-1000 |  | Block Works | 18d | 2015-04-20 | 2015-05-10 | BL1-ST-7F-1070 FS+14d | 96d | 0d | Cash Flow [26434.9 h]; MNHRS [1988 h]; BW [519]; Excavation [18] | 26,434.94 |  |  |  |  | FIN |  |
| BL1-FN-6F-1010 |  | Plaster | 16d | 2015-05-25 | 2015-06-10 | BL1-FN-6F-1000, BL1-MEP-PL-6F-1000, BL1-MEP-PL-6F-1010, BL1-MEP-EL-6F-1010, BL1-MEP-EL-6F-1000 | 113d | 0d | MNHRS [2245.5 h]; Cash Flow [26392 h]; Plaster [749]; Excavation [16] | 26,392.04 |  |  |  |  | FIN |  |
| BL1-FN-6F-1020 |  | Paint 1st Coat | 15d | 2015-06-11 | 2015-06-25 | BL1-FN-6F-1010 | 113d | 0d | MNHRS [674 h]; Cash Flow [4064.48 h]; Painting [749]; Excavation [15] | 4,064.48 |  |  |  |  | FIN |  |
| BL1-FN-6F-1030 |  | Ceiling Paint | 10d | 2015-06-21 | 2015-06-30 | BL1-FN-6F-1020 SS+10d | 113d | 0d | MNHRS [76 h]; Cash Flow [453 h]; Painting [84]; Excavation [10] | 453 |  |  |  |  | FIN |  |
| BL1-FN-6F-1040 |  | Waterproofing | 5d | 2015-07-01 | 2015-07-05 | BL1-FN-6F-1030 | 113d | 0d | MNHRS [14 h]; Cash Flow [263 h]; Waterproofing [46]; Excavation [5] | 263 |  |  |  |  | FIN |  |
| BL1-FN-6F-1050 |  | Wall Tiling | 10d | 2015-07-01 | 2015-07-10 | BL1-FN-6F-1030 | 131d | 18d | MNHRS [1184 h]; Cash Flow [5254.47 h]; Tiling [118.4]; Excavation [10] | 5,254.47 |  |  |  |  | FIN |  |
| BL1-FN-6F-1060 |  | Flooring Works | 20d | 2015-07-06 | 2015-07-25 | BL1-FN-6F-1040 | 113d | 0d | MNHRS [1346 h]; Cash Flow [31373.1 h]; Tiling [205]; Excavation [20] | 31,373.06 |  |  |  |  | FIN |  |
| BL1-FN-6F-1070 |  | False Ceiling | 15d | 2015-07-29 | 2015-08-12 | BL1-FN-6F-1050, BL1-MEP-AC-6F-2060 FF+6d, BL1-MEP-PL-6F-2010 FF+6d, BL1-MEP-PL-6F-2030 FF+6d, BL1-MEP-AC-6F-2070 FF+6d, BL1-MEP-EL-6F-2050 FF+6d, BL1-MEP-EL-6F-2000 FF+6d, BL1-MEP-EL-6F-2010 FF+6d, BL1-MEP-EL-6F-2020 FF+6d, BL1-MEP-EL-6F-2030 FF+6d, BL1-MEP-EL-6F-2070 FF+6d | 113d | 0d | Cash Flow [49060 h]; False Ceiling [1231]; MNHRS [5710 h]; Excavation [15] | 49,060 |  |  |  |  | FIN |  |
| BL1-FN-6F-1080 |  | Hand Rails for Stairs | 15d | 2015-08-13 | 2015-08-27 | BL1-FN-6F-1070 | 113d | 5d | Cash Flow [9483.79 h]; Metal Works & Handrail [20]; MNHRS [43 h]; Excavation [15] | 9,483.79 |  |  |  |  | FIN |  |
| BL1-FN-6F-1090 |  | Doors Installation | 15d | 2015-09-02 | 2015-09-16 | BL1-FN-6F-1080, BL1-FN-5F-1090 | 108d | 0d | Cash Flow [31765.1 h]; Excavation [15] | 31,765.06 |  |  |  |  | FIN |  |
| BL1-FN-6F-1100 |  | Final Paint | 10d | 2015-10-01 | 2015-10-10 | BL1-FN-6F-1060, BL1-MEP-AC-6F-3000 FF+4d, BL1-MEP-EL-6F-3040 FF+4d, BL1-MEP-EL-6F-3000 FF+4d, BL1-MEP-EL-6F-3020 FF+4d, BL1-MEP-EL-6F-3010 FF+4d, BL1-MEP-EL-6F-3050 FF+4d, BL1-MEP-PL-6F-3000 FF+4d, BL1-MEP-PL-6F-3010 FF+4d, BL1-MEP-FF-6F-3010 FF+4d, BL1-MEP-EL-6F-3070 FF+4d, BL1-MEP-EL-6F-3030 FF+4d | 136d | 0d | Excavation [10] |  |  |  |  |  | FIN |  |
|  | 10 | **MEP Work** |  | 2015-04-30 | 2015-10-06 |  |  |  |  |  |  |  |  |  |  |  |
|  | 1 | **Mechanical System** |  | 2015-05-11 | 2015-10-06 |  |  |  |  |  |  |  |  |  |  |  |
|  | 2 | **HVAC Works** |  | 2015-05-11 | 2015-08-26 |  |  |  |  |  |  |  |  |  |  |  |
|  | 1 | **1st Fix** |  | 2015-05-11 | 2015-05-24 |  |  |  |  |  |  |  |  |  |  |  |
| BL1-MEP-AC-6F-1000 |  | Supports and Hungers Fixing | 12d | 2015-05-11 | 2015-05-24 | BL1-MEP-AC-5F-1000, BL1-FN-6F-1000 | 150d | 16d | Cash Flow [326.47 h]; Ductman [192 h]; Excavation [12] | 326.47 |  | MEP | AC | 1st Fix |  | 1f |

| ID | WBS | Activity | Duration | Start | Finish | Predecessors | Total float | Free float | Resources | Cost | Responsibility | MEP Systems | MEP Steps | Fix |
| --- | --- | --- | --- | --- | --- | --- | --- | --- | --- | --- | --- | --- | --- | --- |
|  | 3 | **2nd Fix** |  | 2015-06-11 | 2015-07-30 |  |  |  |  |  |  |  |  |  |
| BL1-MEP-AC-6F-2000 |  | FCU's Installation | 8d | 2015-06-11 | 2015-06-18 | BL1-MEP-AC-6F-1000, BL1-MEP-AC-5F-2010, BL1-FN-6F-1010 | 153d | 30d | Cash Flow [5992.06 h]; Pipe Fitter - CHW [192 h]; Excavation [8] | 5,992.06 | MEP | AC | 2nd Fix | 2f |
| BL1-MEP-AC-6F-2010 |  | Chilled Water Pipes and Fittings Installation | 21d | 2015-06-22 | 2015-07-12 | BL1-MEP-AC-6F-1000, BL1-MEP-AC-5F-2000, BL1-FN-6F-1010 | 123d | 0d | Cash Flow [5230.19 h]; Pipe Fitter - CHW [840 h]; Excavation [21] | 5,230.19 | MEP | AC | 2nd Fix | 2f |
| BL1-MEP-AC-6F-2020 |  | Duct Installation and Insulation | 21d | 2015-06-22 | 2015-07-12 | BL1-MEP-AC-6F-1000, BL1-MEP-AC-5F-2020, BL1-FN-6F-1010 | 124d | 0d | Cash Flow [4329.94 h]; Ductman [263 h]; Excavation [21] | 4,329.94 | MEP | AC | 2nd Fix | 2f |
| BL1-MEP-AC-6F-2030 |  | Chilled Water Pipes Pressure Test | 6d | 2015-07-13 | 2015-07-18 | BL1-MEP-AC-6F-2010 | 123d | 0d | Cash Flow [581.12 h]; Pipe Fitter - CHW [96 h]; Excavation [6] | 581.12 | MEP | AC | 2nd Fix | 2f |
| BL1-MEP-AC-6F-2070 |  | Duct Accessories Installation | 14d | 2015-07-13 | 2015-07-26 | BL1-MEP-AC-6F-2020, BL1-MEP-AC-5F-2070 | 124d | 11d | Cash Flow [652.97 h]; Pipe Fitter - CHW [448 h]; Excavation [14] | 652.97 | MEP | AC | 2nd Fix | 2f |
| BL1-MEP-AC-6F-2040 |  | Chilled Water Pipes Insulation | 12d | 2015-07-19 | 2015-07-30 | BL1-MEP-AC-6F-2030, BL1-MEP-AC-5F-2040 | 183d | 68d | Cash Flow [1658.21 h]; Pipe Fitter - CHW [384 h]; Excavation [12] | 1,658.21 | MEP | AC | 2nd Fix | 2f |
| BL1-MEP-AC-6F-2050 |  | Valve Package Installation | 6d | 2015-07-19 | 2015-07-24 | BL1-MEP-AC-6F-2000, BL1-MEP-AC-6F-2030 | 123d | 0d | Cash Flow [2380.49 h]; Pipe Fitter - CHW [96 h]; Excavation [6] | 2,380.49 | MEP | AC | 2nd Fix | 2f |
| BL1-MEP-AC-6F-2060 |  | FCU's Drain Pipes Installation | 3d | 2015-07-25 | 2015-07-27 | BL1-MEP-AC-6F-2000, BL1-MEP-AC-6F-2050, BL1-MEP-AC-5F-2060 | 123d | 10d | Cash Flow [516.93 h]; Pipe Fitter - CHW [48 h]; Excavation [3] | 516.93 | MEP | AC | 2nd Fix | 2f |
|  | 4 | **Final Fix** |  | 2015-08-15 | 2015-08-26 |  |  |  |  |  |  |  |  |  |
| BL1-MEP-AC-6F-3000 |  | Grills and Diffusers Fixing | 12d | 2015-08-15 | 2015-08-26 | BL1-MEP-AC-6F-2070, BL1-MEP-AC-5F-3000, BL1-FN-6F-1070 | 174d | 41d | Cash Flow [11538.6 h]; Ductman [384 h]; Excavation [12] | 11,538.61 | MEP | AC | Final F | ff |
|  | 1 | **Plumbing and Drainage Works** |  | 2015-05-11 | 2015-10-06 |  |  |  |  |  |  |  |  |  |
|  | 1 | **1st Fix** |  | 2015-05-11 | 2015-05-24 |  |  |  |  |  |  |  |  |  |
| BL1-MEP-PL-6F-1000 |  | Low Level Water Supply Pipes Installation | 12d | 2015-05-11 | 2015-05-24 | BL1-MEP-PL-5F-1000, BL1-FN-6F-1000 | 113d | 0d | Cash Flow [713.22 h]; Plumber [42 h]; Excavation [12] | 713.22 | MEP | PL & D | 1st Fix | 1f |
| BL1-MEP-PL-6F-1010 |  | Low Level Drainage Pipes Installation | 12d | 2015-05-11 | 2015-05-24 | BL1-MEP-PL-5F-1010, BL1-FN-6F-1000 | 113d | 0d | Cash Flow [2279.46 h]; Plumber [12.67 h]; Excavation [12] | 2,279.46 | MEP | PL & D | 1st Fix | 1f |
| BL1-MEP-PL-6F-1020 |  | Supports installation for High level Pipes | 12d | 2015-05-11 | 2015-05-24 | BL1-MEP-PL-5F-1020, BL1-FN-6F-1000 | 159d | 27d | Cash Flow [819.68 h]; Plumber [16.35 h]; Excavation [12] | 819.68 | MEP | PL & D | 1st Fix | 1f |
|  | 3 | **2nd Fix** |  | 2015-06-22 | 2015-08-06 |  |  |  |  |  |  |  |  |  |
| BL1-MEP-PL-6F-2000 |  | High Level Drainage Pipes Installation | 21d | 2015-06-22 | 2015-07-12 | BL1-MEP-PL-6F-1020, BL1-MEP-PL-6F-1010, BL1-FN-6F-1010, BL1-MEP-PL-5F-2000 | 132d | 0d | Cash Flow [6562.53 h]; Plumber [244.38 h]; Excavation [21] | 6,562.53 | MEP | PL & D | 2nd Fix | 2f |
| BL1-MEP-PL-6F-2020 |  | High Level Water Supply Pipes and Fittings Installation | 21d | 2015-06-22 | 2015-07-12 | BL1-MEP-PL-6F-1020, BL1-MEP-PL-6F-1000, BL1-MEP-PL-5F-2010, BL1-FN-6F-1010 | 132d | 0d | Cash Flow [1308.6 h]; Plumber [150.02 h]; Excavation [21] | 1,308.6 | MEP | PL & D | 2nd Fix | 2f |
| BL1-MEP-PL-6F-2030 |  | Water Supply Pipes Pressure Test | 6d | 2015-07-13 | 2015-07-18 | BL1-MEP-PL-6F-2020, BL1-MEP-PL-6F-1000, BL1-MEP-PL-5F-2030 | 132d | 19d | Cash Flow [145.74 h]; Plumber [48 h]; Excavation [6] | 145.74 | MEP | PL & D | 2nd Fix | 2f |
| BL1-MEP-PL-6F-1030 |  | Floor Drain Installation | 6d | 2015-07-26 | 2015-07-31 | BL1-MEP-PL-5F-1030, BL1-FN-6F-1060 | 113d | 0d | Cash Flow [548.14 h]; Plumber [6 h]; Excavation [6] | 548.14 | MEP | PL & D | 1st Fix | 2f |
| BL1-MEP-PL-6F-2010 |  | Drainage Pipes Gravity Test | 6d | 2015-08-01 | 2015-08-06 | BL1-MEP-PL-6F-2000, BL1-MEP-PL-6F-1010, BL1-MEP-PL-6F-1030, BL1-MEP-PL-5F-2020 | 113d | 0d | Cash Flow [820.24 h]; Plumber [48 h]; Excavation [6] | 820.24 | MEP | PL & D | 2nd Fix | 2f |
|  | 4 | **Final Fix** |  | 2015-09-17 | 2015-10-06 |  |  |  |  |  |  |  |  |  |
| BL1-MEP-PL-6F-3000 |  | Sanitary Ware Installation Including Connection | 14d | 2015-09-17 | 2015-09-30 | BL1-MEP-PL-6F-2030, BL1-MEP-PL-6F-2010, BL1-MEP-PL-5F-3000, BL1-FN-6F-1050, BL1-FN-6F-1060, BL1-FN-6F-1070, BL1-FN-6F-1090 | 108d | 0d | Cash Flow [4439.52 h]; Plumber [383.86 h]; Excavation [14] | 4,439.52 | MEP | PL & D | Final F | ff |
| BL1-MEP-PL-6F-3010 |  | Sanitary Ware Accessories Installation | 6d | 2015-10-01 | 2015-10-06 | BL1-MEP-PL-6F-3000, BL1-MEP-PL-5F-3010 | 108d | 0d | Cash Flow [160.22 h]; Plumber [36.45 h]; Excavation [6] | 160.22 | MEP | PL & D | Final F | ff |

| ID | WBS | Activity | Duration | Start | Finish | Predecessors | Total float | Free float | Resources | Cost | Responsibility | MEP Systems | MEP Steps | Fix |
| --- | --- | --- | --- | --- | --- | --- | --- | --- | --- | --- | --- | --- | --- | --- |
|  | 3 | **Fire Fighting Works** |  | 2015-08-13 | 2015-10-03 |  |  |  |  |  |  |  |  |  |
|  | 4 | **Final Fix** |  | 2015-08-13 | 2015-10-03 |  |  |  |  |  |  |  |  |  |
| BL1-MEP-FF-6F-3010 |  | Hose reel Cabinet Installation and Connection | 6d | 2015-08-13 | 2015-08-18 | BL1-MEP-FF-5F-3010, BL1-FN-6F-1050, BL1-FN-6F-1070 | 182d | 49d | Cash Flow [1330.85 h]; Plumber [192 h]; Excavation [6] | 1,330.85 | MEP | FF | Final F | ff |
| BL1-MEP-FF-6F-3000 |  | Fire Extinguisher Installation | 2d | 2015-10-02 | 2015-10-03 | BL1-MEP-FF-5F-3000, BL1-FN-6F-1050, BL1-FN-6F-1100 SS+1d | 136d | 51d | Cash Flow [1074.99 h]; Plumber [8 h]; Excavation [2] | 1,074.99 | MEP | FF | Final F | ff |
|  | 3 | **Electrical System** |  | 2015-04-30 | 2015-09-09 |  |  |  |  |  |  |  |  |  |
|  | 1 | **1st Fix** |  | 2015-04-30 | 2015-05-17 |  |  |  |  |  |  |  |  |  |
| BL1-MEP-EL-6F-1000 |  | PVC Back Boxes and Conduits Fixing in Wall | 12d | 2015-04-30 | 2015-05-13 | BL1-MEP-EL-5F-1000, BL1-FN-6F-1000 SS+3d, BL1-FN-6F-1000 FF+3d | 96d | 5d | Cash Flow [3307.67 h]; Electrician [384 h]; Excavation [12] | 3,307.67 | MEP | EL | 1st Fix | 1f |
| BL1-MEP-EL-6F-1010 |  | DB's Inclosure Fixing | 6d | 2015-05-11 | 2015-05-17 | BL1-MEP-EL-5F-1010, BL1-FN-6F-1000 | 119d | 6d | Cash Flow [2130.4 h]; Electrician [96 h]; Excavation [6] | 2,130.4 | MEP | EL | 1st Fix | 1f |
|  | 2 | **2nd Fix** |  | 2015-06-11 | 2015-07-25 |  |  |  |  |  |  |  |  |  |
| BL1-MEP-EL-6F-2040 |  | Low Current System Wiring | 14d | 2015-06-11 | 2015-06-24 | BL1-MEP-EL-6F-1000, BL1-FN-6F-1010 | 216d | 53d | Cash Flow [38217.8 h]; Electrician [244 h]; Excavation [14] | 38,217.78 | MEP | EL |  | 2f |
| BL1-MEP-EL-6F-2050 |  | Emergency Light Wiring | 8d | 2015-06-11 | 2015-06-18 | BL1-MEP-EL-6F-1000, BL1-MEP-EL-5F-2060, BL1-FN-6F-1010 | 162d | 49d | Cash Flow [1202.03 h]; Electrician [128 h]; Excavation [8] | 1,202.03 | MEP | EL | 2nd Fix | 2f |
| BL1-MEP-EL-6F-2000 |  | Lighting Wiring | 12d | 2015-06-13 | 2015-06-24 | BL1-MEP-EL-6F-1000, BL1-MEP-EL-5F-2030, BL1-FN-6F-1010 | 156d | 0d | Cash Flow [3566.08 h]; Electrician [241.71 h]; Excavation [12] | 3,566.08 | MEP | EL | 2nd Fix | 2f |
| BL1-MEP-EL-6F-2010 |  | Power Points Wiring | 12d | 2015-06-13 | 2015-06-24 | BL1-MEP-EL-6F-1000, BL1-MEP-EL-5F-2040, BL1-FN-6F-1010 | 144d | 0d | Cash Flow [2894.21 h]; Electrician [192 h]; Excavation [12] | 2,894.21 | MEP | EL | 2nd Fix | 2f |
| BL1-MEP-EL-6F-2030 |  | Fire Alarm System Wiring | 12d | 2015-06-13 | 2015-06-24 | BL1-MEP-EL-6F-1000, BL1-MEP-EL-5F-2010, BL1-FN-6F-1010 | 156d | 0d | Cash Flow [7111.01 h]; Electrician [192 h]; Excavation [12] | 7,111.01 | MEP | EL | 2nd Fix | 2f |
| BL1-MEP-EL-6F-2020 |  | Cable Tray and Trunking Installation | 14d | 2015-06-15 | 2015-06-28 | BL1-MEP-EL-5F-2000, BL1-FN-6F-1010 | 152d | 13d | Cash Flow [9064.45 h]; Electrician [336 h]; Excavation [14] | 9,064.45 | MEP | EL | 2nd Fix | 2f |
| BL1-MEP-EL-6F-2060 |  | SMDB's Installation | 6d | 2015-06-26 | 2015-07-01 | BL1-MEP-EL-6F-1000, BL1-FN-6F-1020, BL1-MEP-EL-5F-2050 | 210d | 2d | Cash Flow [4196.6 h]; Electrician [45 h]; Excavation [6] | 4,196.6 | MEP | EL | 2nd Fix | 2f |
| BL1-MEP-EL-6F-2070 |  | DB's Installation and Termination | 12d | 2015-06-28 | 2015-07-09 | BL1-MEP-EL-6F-1010, BL1-MEP-EL-5F-2070, BL1-MEP-EL-6F-2010, BL1-FN-6F-1020 | 141d | 2d | Cash Flow [4970.93 h]; Electrician [288 h]; Excavation [12] | 4,970.93 | MEP | EL | 2nd Fix | 2f |
| BL1-MEP-EL-6F-3060 |  | Power Cable Puling | 14d | 2015-07-12 | 2015-07-25 | BL1-MEP-EL-6F-2020, BL1-MEP-EL-6F-2000, BL1-MEP-EL-6F-2010, BL1-MEP-EL-5F-3060, BL1-MEP-EL-6F-2070 | 163d | 12d | Cash Flow [6361.76 h]; Electrician [168 h]; Excavation [14] | 6,361.76 | MEP | EL | 2nd Fix | 2f |
|  | 3 | **Final Fix** |  | 2015-08-13 | 2015-09-09 |  |  |  |  |  |  |  |  |  |
| BL1-MEP-EL-6F-3000 |  | Emergency Light Fixing | 8d | 2015-08-13 | 2015-08-20 | BL1-MEP-EL-6F-2050, BL1-FN-6F-1070, BL1-MEP-EL-5F-3000 | 183d | 47d | Cash Flow [5714.02 h]; Electrician [128 h]; Excavation [8] | 5,714.02 | MEP | EL | Final F | ff |
| BL1-MEP-EL-6F-3050 |  | Sockets and Switches Fixing | 8d | 2015-08-13 | 2015-08-20 | BL1-MEP-EL-6F-2010, BL1-FN-6F-1070, BL1-MEP-EL-5F-3050 | 175d | 0d | Cash Flow [1166.96 h]; Electrician [128 h]; Excavation [8] | 1,166.96 | MEP | EL | Final F | ff |
| BL1-MEP-EL-6F-3070 |  | SMDB's Termination and Final Connection | 6d | 2015-08-13 | 2015-08-18 | BL1-MEP-EL-6F-2060, BL1-MEP-EL-5F-3070, BL1-MEP-EL-6F-3060, BL1-FN-6F-1070 | 168d | 2d | Cash Flow [2785.83 h]; Electrician [192 h]; Excavation [6] | 2,785.82 | MEP | EL | Final F | ff |
| BL1-MEP-EL-6F-3010 |  | Fire Alarm System Detector Installation | 12d | 2015-08-15 | 2015-08-26 | BL1-MEP-EL-6F-2030, BL1-FN-6F-1070, BL1-MEP-EL-5F-3010 | 165d | 0d | Cash Flow [4034.38 h]; Electrician [192 h]; Excavation [12] | 4,034.38 | MEP | EL | Final F | ff |
| BL1-MEP-EL-6F-3030 |  | Despature for Low Current System Installation | 14d | 2015-08-17 | 2015-08-30 | BL1-MEP-EL-6F-2040, BL1-MEP-EL-5F-3030, BL1-FN-6F-1020, BL1-FN-6F-1070 | 163d | 0d | Cash Flow [72738.2 h]; Electrician [336 h]; Excavation [14] | 72,738.16 | MEP | EL |  | ff |
| BL1-MEP-EL-6F-3020 |  | Lights Fitting Fixing | 14d | 2015-08-21 | 2015-09-03 | BL1-MEP-EL-6F-2000, BL1-FN-6F-1070, BL1-MEP-EL-5F-3020 | 155d | 0d | Cash Flow [7322.66 h]; Electrician [244 h]; Excavation [14] | 7,322.66 | MEP | EL | Final F | ff |
| BL1-MEP-EL-6F-3040 |  | Low Current System Outlet installation and Connection | 10d | 2015-08-31 | 2015-09-09 | BL1-MEP-EL-6F-2040, BL1-MEP-EL-6F-3030 | 163d | 27d | Cash Flow [3860.79 h]; Electrician [80 h]; Excavation [10] | 3,860.79 | MEP | EL |  | ff |

| ID | WBS | Activity | Duration | Start | Finish | Predecessors | Total float | Free float | Calendar | Resources | Cost | Structural | Responsibility | MEP Systems | MEP Steps | Finishing |
| --- | --- | --- | --- | --- | --- | --- | --- | --- | --- | --- | --- | --- | --- | --- | --- | --- |
|  | 10 | **Roof** |  | 2015-03-08 | 2015-11-17 |  |  |  |  |  |  |  |  |  |  |  |
|  | 1 | **Structural** |  | 2015-03-08 | 2015-04-22 |  |  |  |  |  |  |  |  |  |  |  |
| BL1-ST-7F-1000 |  | Reinforcement for Verticals | 7d | 2015-03-08 | 2015-03-15 | ENG-STR-BL1-APP310, ENG-STR-BL1-APP320, ENG-STR-BL1-APP330, ENG-STR-BL1-APP340, BL1-ST-6F-1070 | 57.5d | 0d |  | MNHRS [644.34 h]; Cash Flow [43079.3 h]; Reinforcement [34189.9]; Excavation [7] | 43,079.3 | STR |  |  |  |  |
| BL1-ST-7F-1010 |  | MEP Works in Vertical Element | 5d | 2015-03-10 | 2015-03-15 | ENGMEP8640, BL1-ST-7F-1000 FF | 61.5d | 4d |  | Cash Flow [1798.55 h]; Electrician [160 h]; Excavation [5] | 1,798.55 |  | MEP | EL | B.W |  |
| BL1-ST-7F-1020 |  | FW for Verticals | 4d | 2015-03-16 | 2015-03-19 | BL1-ST-7F-1000 | 57.5d | 0d |  | MNHRS [11779.2 h]; Cash Flow [51785.8 h]; FW [1663]; Excavation [4] | 51,785.8 | STR |  |  |  |  |
| BL1-ST-7F-1030 |  | Concrete Verticals | 1d | 2015-03-21 | 2015-03-21 | BL1-ST-7F-1020, BL1-ST-7F-1010 | 57.5d | 0d |  | MNHRS [1895.59 h]; Cash Flow [31648 h]; Concrete [229.28]; Excavation [1] | 31,648 | STR |  |  |  |  |
| BL1-ST-7F-1040 |  | FW for Slab | 5d | 2015-03-22 | 2015-03-26 | BL1-ST-7F-1030 | 57.5d | 0d |  | MNHRS [10142.8 h]; Cash Flow [44592.5 h]; FW [1432]; Excavation [5] | 44,592.48 | STR |  |  |  |  |
| BL1-ST-7F-1050 |  | Reinforcement for Slab | 5d | 2015-03-28 | 2015-04-01 | BL1-ST-7F-1040 | 57.5d | 0d |  | MNHRS [1189.26 h]; Cash Flow [79511.8 h]; Reinforcement [63104.5]; Excavation [5] | 79,511.76 | STR |  |  |  |  |
| BL1-ST-7F-1060 |  | MEP Works in Slab & Beams | 5d | 2015-03-28 | 2015-04-01 | ENGMEP8640, BL1-ST-7F-1050 FF | 57.5d | 0d |  | Cash Flow [3349.02 h]; Electrician [320 h]; Excavation [5] | 3,349.02 |  | MEP | EL | B.W |  |
| BL1-ST-7F-1070 |  | Concrete for Slab | 1d | 2015-04-02 | 2015-04-02 | BL1-ST-7F-1050, BL1-ST-7F-1060 | 57.5d | 0d |  | MNHRS [2921.4 h]; Cash Flow [48725 h]; Concrete [353]; Excavation [1] | 48,725 | STR |  |  |  |  |
| BL1-ST-7F-1080 |  | Reinforcement for Staircase Verticals | 5d | 2015-04-04 | 2015-04-08 | BL1-ST-7F-1070 | 55.5d | 0d | EMIRAL ALGERIA | Excavation [5] |  |  |  |  |  |  |
| BL1-ST-7F-1090 |  | FW for Parapet | 8d | 2015-04-04 | 2015-04-12 | BL1-ST-7F-1070 | 117d | 0d | EMIRAL ALGERIA | Excavation [8] |  |  |  |  |  |  |
| BL1-ST-7F-1100 |  | Reinforcement for Parapet | 3d | 2015-04-07 | 2015-04-09 | BL1-ST-7F-1090 SS+3d | 119d | 2d | EMIRAL ALGERIA | Excavation [3] |  |  |  |  |  |  |
| BL1-ST-7F-1110 |  | FW for Staircase Verticals | 4d | 2015-04-09 | 2015-04-13 | BL1-ST-7F-1080 | 55.5d | 0d | EMIRAL ALGERIA | Excavation [4] |  |  |  |  |  |  |
| BL1-ST-7F-1120 |  | Concrete for Parapet | 1d | 2015-04-13 | 2015-04-13 | BL1-ST-7F-1090, BL1-ST-7F-1100 | 117d | 39d | EMIRAL ALGERIA | Excavation [1] |  |  |  |  |  |  |
| BL1-ST-7F-1130 |  | Concrete for Staircase Verticals | 1d | 2015-04-14 | 2015-04-14 | BL1-ST-7F-1110 | 55.5d | 0d | EMIRAL ALGERIA | Excavation [1] |  |  |  |  |  |  |
| BL1-ST-7F-1140 |  | FW for Staircase Slab | 3d | 2015-04-15 | 2015-04-18 | BL1-ST-7F-1130 | 55.5d | 0d | EMIRAL ALGERIA | Excavation [3] |  |  |  |  |  |  |
| BL1-ST-7F-1150 |  | Reinforcement for Staircase Slab | 3d | 2015-04-19 | 2015-04-21 | BL1-ST-7F-1140 | 55.5d | 0d | EMIRAL ALGERIA | Excavation [3] |  |  |  |  |  |  |
| BL1-ST-7F-1160 |  | Concrete for Staircase Slab | 1d | 2015-04-22 | 2015-04-22 | BL1-ST-7F-1150 | 55.5d | 0d | EMIRAL ALGERIA | Excavation [1] |  |  |  |  |  |  |
|  | 2 | **Fiishing** |  | 2015-05-10 | 2015-10-01 |  |  |  |  |  |  |  |  |  |  |  |
| BL1-FN-7F-1000 |  | Block Works | 18d | 2015-05-10 | 2015-05-30 | BL1-ST-7F-1160 FS+14d | 60.5d | 0d |  | Cash Flow [30293.4 h]; MNHRS [2278.6 h]; BW [594.9]; Excavation [18] | 30,293.38 |  |  |  |  | FIN |
| BL1-FN-7F-1010 |  | Plaster | 16d | 2015-06-03 | 2015-06-18 | BL1-FN-7F-1000, BL1-MEP-EL-7F-1000, BL1-ST-7F-1120 FS+3d | 91d | 0d |  | MNHRS [2960.7 h]; Cash Flow [34798 h]; Plaster [986.9]; Excavation [16] | 34,797.96 |  |  |  |  | FIN |
| BL1-FN-7F-1020 |  | Paint 1st Coat | 15d | 2015-06-19 | 2015-07-03 | BL1-FN-7F-1010 | 91d | 0d |  | MNHRS [888.2 h]; Cash Flow [5585.28 h]; Painting [986.9]; Excavation [15] | 5,585.28 |  |  |  |  | FIN |
| BL1-FN-7F-1060 |  | Flooring Works | 20d | 2015-07-04 | 2015-07-23 | BL1-FN-7F-1020 | 91d | 0d |  | MNHRS [1506.04 h]; Cash Flow [35096.6 h]; Tiling [229.23]; Excavation [20] | 35,096.58 |  |  |  |  | FIN |
| BL1-FN-7F-1080 |  | Hand Rails for Stairs | 15d | 2015-07-24 | 2015-08-07 | BL1-FN-7F-1060 | 199d | 40d |  | Cash Flow [14225.7 h]; Metal Works & Handrail [30]; MNHRS [64.5 h]; Excavation [15] | 14,225.69 |  |  |  |  | FIN |
| BL1-FN-7F-1090 |  | Final Paint | 10d | 2015-09-12 | 2015-09-21 | BL1-FN-7F-1060, BL1-MEP-EL-7F-3030 FF+4d, BL1-MEP-EL-7F-3020 FF+4d, BL1-MEP-EL-7F-3010 FF+4d, BL1-MEP-EL-7F-3060 FF+4d | 155d | 0d |  | Excavation [10] |  |  |  |  |  | FIN |
| BL1-FN-7F-1100 |  | Doors Installation | 15d | 2015-09-17 | 2015-10-01 | BL1-FN-7F-1080, BL1-FN-6F-1090 | 159d |  |  | Cash Flow [31765.1 h]; Excavation [15] | 31,765.06 |  |  |  |  | FIN |

| ID | WBS | Activity | Type | Duration | Start | Finish | Predecessors | Total float | Free float | Resources | Cost | Responsibility | MEP Systems | MEP Steps | Fix |
| --- | --- | --- | --- | --- | --- | --- | --- | --- | --- | --- | --- | --- | --- | --- | --- |
|  | 11 | **MEP Work** |  |  | 2015-05-20 | 2015-11-17 |  |  |  |  |  |  |  |  |  |
|  | 1 | **Mechanical System** |  |  | 2015-06-19 | 2015-10-27 |  |  |  |  |  |  |  |  |  |
|  | 2 | **HVAC Works** |  |  | 2015-07-23 | 2015-10-27 |  |  |  |  |  |  |  |  |  |
|  | 1 | **1st Fix** |  |  | 2015-07-23 | 2015-08-10 |  |  |  |  |  |  |  |  |  |
| BL1-MEP-AC-7F-1000 |  | Foundation for MEP Equipments ready | milestone | 0d | 2015-07-23 | 2015-07-23 | BL1-FN-7F-1060 | 91d | 0d |  |  | MEP | AC | 1st Fix |  |
| BL1-MEP-AC-7F-1010 |  | Supports and Hungers Fixing |  | 18d | 2015-07-24 | 2015-08-10 | BL1-MEP-AC-6F-1000, OFF-ENG-MEP-AC1170, OFF-PRO-MEP-AC1520, BL1-MEP-AC-7F-1000 | 91d | 0d | Cash Flow [979.38 h]; Ductman [192 h]; Excavation [18] | 979.38 | MEP | AC | 1st Fix | 1f |
|  | 3 | **2nd Fix** |  |  | 2015-08-11 | 2015-10-27 |  |  |  |  |  |  |  |  |  |
| BL1-MEP-AC-7F-2000 |  | Heat Pumps Installation |  | 21d | 2015-08-11 | 2015-08-31 | BL1-MEP-AC-7F-1000, BL1-MEP-AC-7F-1010, OFF-PRO-MEP-AC1220 | 91d | 0d | Cash Flow [16506.2 h]; Pipe Fitter - CHW [504 h]; Excavation [21] | 16,506.22 | MEP | AC | 2nd Fix | 2f |
| BL1-MEP-AC-7F-2010 |  | AHU's Installation |  | 21d | 2015-08-11 | 2015-08-31 | BL1-MEP-AC-7F-1000, BL1-MEP-AC-7F-1010, OFF-PRO-MEP-AC1270 | 93d | 0d | Cash Flow [87518.9 h]; Pipe Fitter - CHW [504 h]; Excavation [21] | 87,518.94 | MEP | AC | 2nd Fix | 2f |
| BL1-MEP-AC-7F-2020 |  | Pressurization Units Installation |  | 21d | 2015-08-11 | 2015-08-31 | BL1-MEP-AC-7F-1000, BL1-MEP-AC-7F-1010 | 93d | 0d | Cash Flow [14019 h]; Pipe Fitter - CHW [504 h]; Excavation [21] | 14,018.95 | MEP | AC | 2nd Fix | 2f |
| BL1-MEP-AC-7F-2030 |  | Chemical Treatment Unit Installation |  | 14d | 2015-08-11 | 2015-08-24 | BL1-MEP-AC-7F-1000, BL1-MEP-AC-7F-1010, OFF-PRO-MEP-AC1420 | 155d | 64d | Cash Flow [25779.2 h]; Pipe Fitter - CHW [336 h]; Excavation [14] | 25,779.17 | MEP | AC | 2nd Fix | 2f |
| BL1-MEP-AC-7F-2040 |  | Duct Installation and Insulation and Final Connection |  | 30d | 2015-09-01 | 2015-09-30 | BL1-MEP-AC-7F-1010, BL1-MEP-AC-6F-2020, BL1-MEP-AC-6F-2070, BL1-MEP-AC-7F-2010, BL1-MEP-AC-7F-2020 | 93d | 0d | Cash Flow [5549.65 h]; Ductman [960 h]; Excavation [30] | 5,549.65 | MEP | AC | 2nd Fix | 2f |
| BL1-MEP-AC-7F-2050 |  | Chilled Water Pipes and Fittings Installation and Final Connection |  | 30d | 2015-09-01 | 2015-09-30 | BL1-MEP-AC-7F-1010, BL1-MEP-AC-6F-2010, BL1-MEP-AC-7F-2000 | 91d | 0d | Cash Flow [14864.8 h]; Pipe Fitter - CHW [960 h]; Excavation [30] | 14,864.75 | MEP | AC | 2nd Fix | 2f |
| BL1-MEP-AC-7F-2060 |  | BTU Meter Installation |  | 6d | 2015-09-01 | 2015-09-06 | BL1-MEP-AC-7F-2010, OFF-PRO-MEP-AC1270 | 142d | 51d | Cash Flow [17896 h]; Pipe Fitter - CHW [96 h]; Excavation [6] | 17,896.03 | MEP | AC | 2nd Fix | 2f |
| BL1-MEP-AC-7F-2070 |  | Extract and Fresh Fan's Installation |  | 25d | 2015-10-01 | 2015-10-25 | BL1-MEP-AC-7F-2040, BL1-MEP-AC-7F-1000, OFF-PRO-MEP-AC1470 | 93d | 2d | Cash Flow [130238 h]; Pipe Fitter - CHW [800 h]; Excavation [25] | 130,237.53 | MEP | AC | 2nd Fix | 2f |
| BL1-MEP-AC-7F-2080 |  | Chilled Water Pipes Pressure Test |  | 6d | 2015-10-01 | 2015-10-06 | BL1-MEP-AC-7F-2050 | 91d | 0d | Cash Flow [1651.63 h]; Pipe Fitter - CHW [96 h]; Excavation [6] | 1,651.63 | MEP | AC | 2nd Fix | 2f |
| BL1-MEP-AC-7F-2090 |  | Chilled Water Pipes Insulation |  | 18d | 2015-10-07 | 2015-10-24 | BL1-MEP-AC-7F-2080, BL1-MEP-AC-6F-2040 | 115d | 30d | Cash Flow [4717.51 h]; Pipe Fitter - CHW [576 h]; Excavation [18] | 4,717.51 | MEP | AC | 2nd Fix | 2f |
| BL1-MEP-AC-7F-2100 |  | Chilled Water Pumps Installation and Final Connection |  | 21d | 2015-10-07 | 2015-10-27 | BL1-MEP-AC-7F-2080, BL1-MEP-AC-7F-1000, OFF-PRO-MEP-AC1370 | 91d | 0d | Cash Flow [134311 h]; Pipe Fitter - CHW [672 h]; Excavation [21] | 134,311.27 | MEP | AC | 2nd Fix | 2f |
|  | 1 | **Plumbing and Drainage Works** |  |  | 2015-06-19 | 2015-07-28 |  |  |  |  |  |  |  |  |  |
|  | 4 | **Final Fix** |  |  | 2015-06-19 | 2015-07-28 |  |  |  |  |  |  |  |  |  |
| BL1-MEP-PL-7F-3000 |  | Vent Pipes Installation |  | 14d | 2015-06-19 | 2015-07-02 | OFF-ENG-MEP-DR1130, BL1-FN-7F-1010 | 178d | 0d | Cash Flow [971.63 h]; Plumber [383.86 h]; Excavation [14] | 971.63 | MEP | PL & D | Final F | ff |
| BL1-MEP-PL-7F-3010 |  | Rain Outlet Installation |  | 6d | 2015-07-03 | 2015-07-08 | BL1-MEP-PL-7F-3000, BL1-FN-7F-1010 | 178d | 15d | Cash Flow [444.47 h]; Plumber [36.45 h]; Excavation [6] | 444.47 | MEP | PL & D | Final F | ff |
| BL1-MEP-PL-7F-3020 |  | Pip Tap Fixing |  | 5d | 2015-07-24 | 2015-07-28 | BL1-MEP-PL-7F-3010, BL1-FN-7F-1060 | 163d | 57d | Cash Flow [124.04 h]; Plumber [8 h]; Excavation [5] | 124.04 | MEP | PL & D | Final F | ff |
|  | 3 | **Fire Fighting Works** |  |  | 2015-09-13 | 2015-09-14 |  |  |  |  |  |  |  |  |  |
|  | 4 | **Final Fix** |  |  | 2015-09-13 | 2015-09-14 |  |  |  |  |  |  |  |  |  |
| BL1-MEP-FF-7F-3000 |  | Fire Extinguisher Installation |  | 2d | 2015-09-13 | 2015-09-14 | OFF-ENG-MEP-FF1120, BL1-FN-7F-1060, BL1-FN-7F-1090 SS+1d | 155d | 70d | Cash Flow [1074.99 h]; Plumber [8 h]; Excavation [2] | 1,074.99 | MEP | FF | Final F | ff |

| ID | WBS | Activity | Duration | Start | Finish | Predecessors | Total float | Free float | Resources | Cost | Responsibility | MEP Systems | MEP Steps | Fix |
| --- | --- | --- | --- | --- | --- | --- | --- | --- | --- | --- | --- | --- | --- | --- |
|  | 3 | **Electrical System** |  | 2015-05-20 | 2015-11-17 |  |  |  |  |  |  |  |  |  |
|  | 1 | **1st Fix** |  | 2015-05-20 | 2015-06-02 |  |  |  |  |  |  |  |  |  |
| BL1-MEP-EL-7F-1000 |  | PVC Back Boxes and Conduits Fixing in Wall | 12d | 2015-05-20 | 2015-06-02 | BL1-MEP-EL-6F-1000, BL1-FN-7F-1000 SS+3d, BL1-FN-7F-1000 FF+3d | 91d | 0d | Cash Flow [3307.67 h]; Electrician [384 h]; Excavation [12] | 3,307.67 | MEP | EL | 1st Fix | 1f |
|  | 2 | **2nd Fix** |  | 2015-06-19 | 2015-08-20 |  |  |  |  |  |  |  |  |  |
| BL1-MEP-EL-7F-2000 |  | Lighting Protection | 5d | 2015-06-19 | 2015-06-23 | BL1-MEP-EL-7F-1000, ENGMEP8870, BL1-FN-7F-1010 | 238d | 196d | Cash Flow [41.35 h]; Electrician [160 h]; Excavation [5] | 41.35 | MEP | EL | 2nd Fix | 2f |
| BL1-MEP-EL-7F-2010 |  | Lighting Wiring | 12d | 2015-06-25 | 2015-07-06 | BL1-MEP-EL-7F-1000, BL1-MEP-EL-6F-2000, BL1-FN-7F-1010 | 182d | 31d | Cash Flow [3566.08 h]; Electrician [241.71 h]; Excavation [12] | 3,566.08 | MEP | EL | 2nd Fix | 2f |
| BL1-MEP-EL-7F-2020 |  | Power Points Wiring | 12d | 2015-06-25 | 2015-07-06 | BL1-MEP-EL-7F-1000, BL1-MEP-EL-6F-2010, BL1-FN-7F-1010 | 182d | 31d | Cash Flow [2894.21 h]; Electrician [192 h]; Excavation [12] | 2,894.21 | MEP | EL | 2nd Fix | 2f |
| BL1-MEP-EL-7F-2030 |  | Fire Alarm System Wiring | 12d | 2015-06-25 | 2015-07-06 | BL1-MEP-EL-7F-1000, BL1-MEP-EL-6F-2030, BL1-FN-7F-1010 | 216d | 51d | Cash Flow [7111.01 h]; Electrician [192 h]; Excavation [12] | 7,111.01 | MEP | EL | 2nd Fix | 2f |
| BL1-MEP-EL-7F-2040 |  | SMDB's Installation | 6d | 2015-07-04 | 2015-07-09 | BL1-MEP-EL-7F-1000, BL1-FN-7F-1020, BL1-MEP-EL-6F-2060 | 208d | 42d | Cash Flow [4196.6 h]; Electrician [45 h]; Excavation [6] | 4,196.6 | MEP | EL | 2nd Fix | 2f |
| BL1-MEP-EL-7F-2050 |  | Cable Tray and Trunking Installation | 14d | 2015-07-24 | 2015-08-06 | BL1-MEP-EL-6F-2020, BL1-FN-7F-1060 | 151d | 0d | Cash Flow [9064.45 h]; Electrician [336 h]; Excavation [14] | 9,064.45 | MEP | EL | 2nd Fix | 2f |
| BL1-MEP-EL-7F-3050 |  | Power Cable Puling | 14d | 2015-08-07 | 2015-08-20 | BL1-MEP-EL-7F-2050, BL1-MEP-EL-7F-2010, BL1-MEP-EL-7F-2020, BL1-MEP-EL-6F-3060 | 151d | 0d | Cash Flow [6361.76 h]; Electrician [168 h]; Excavation [14] | 6,361.76 | MEP | EL | 2nd Fix | 2f |
|  | 3 | **Final Fix** |  | 2015-08-13 | 2015-11-17 |  |  |  |  |  |  |  |  |  |
| BL1-MEP-EL-7F-3000 |  | Air Craft Lights Installation | 10d | 2015-08-13 | 2015-08-22 | BL1-MEP-EL-7F-1000, BL1-MEP-EL-7F-2010, PROCMEPELE9480 | 178d | 136d | Cash Flow [82.69 h]; Electrician [160 h]; Excavation [10] | 82.69 | MEP | EL | Final F | ff |
| BL1-MEP-EL-7F-3010 |  | Sockets and Switches Fixing | 8d | 2015-08-21 | 2015-08-28 | BL1-MEP-EL-7F-2020, BL1-FN-7F-1060, BL1-MEP-EL-6F-3050 | 175d | 20d | Cash Flow [1166.96 h]; Electrician [128 h]; Excavation [8] | 1,166.96 | MEP | EL | Final F | ff |
| BL1-MEP-EL-7F-3060 |  | SMDB's Termination and Final Connection | 6d | 2015-08-21 | 2015-08-26 | BL1-MEP-EL-7F-2040, BL1-MEP-EL-6F-3070, BL1-MEP-EL-7F-3050 | 166d | 22d | Cash Flow [2785.83 h]; Electrician [192 h]; Excavation [6] | 2,785.82 | MEP | EL | Final F | ff |
| BL1-MEP-EL-7F-3020 |  | Fire Alarm System Detector Installation | 12d | 2015-08-27 | 2015-09-07 | BL1-MEP-EL-7F-2030, BL1-FN-7F-1060, BL1-MEP-EL-6F-3010 | 165d | 10d | Cash Flow [4034.38 h]; Electrician [192 h]; Excavation [12] | 4,034.38 | MEP | EL | Final F | ff |
| BL1-MEP-EL-7F-3030 |  | Lights Fitting Fixing | 14d | 2015-09-04 | 2015-09-17 | BL1-MEP-EL-7F-2010, BL1-FN-7F-1060, BL1-MEP-EL-6F-3020, PROCMEPELE4510 | 155d | 0d | Cash Flow [7322.66 h]; Electrician [244 h]; Excavation [14] | 7,322.66 | MEP | EL | Final F | ff |
| BL1-MEP-EL-7F-3040 |  | Equipments Panels Installation and Termination | 21d | 2015-10-28 | 2015-11-17 | BL1-MEP-EL-7F-2020, BL1-MEP-EL-7F-1000, BL1-MEP-AC-7F-2000, BL1-MEP-AC-7F-2010, BL1-MEP-AC-7F-2020, BL1-MEP-AC-7F-2030, BL1-MEP-AC-7F-2060, BL1-MEP-AC-7F-2100, BL1-MEP-AC-7F-2070, BL1-FN-7F-1060 | 91d | 49d | Cash Flow [133382 h]; Electrician [1008 h]; Excavation [21] | 133,381.64 | MEP | EL | Final F | ff |
|  | 17 | **MEP Riser** |  | 2015-05-31 | 2015-08-08 |  |  |  |  |  |  |  |  |  |
| BL1-MEP-RZR-120 |  | Fire Fighting Pipes Riser and Final Connection | 21d | 2015-05-31 | 2015-06-20 | OFF-ENG-MEP-FF1150, OFF-ENG-MEP-FF1160, BL1-FN-7F-1000 | 60.5d | 0d | Cash Flow [19691 h]; Plumber [672 h]; Excavation [21] | 19,690.99 | MEP | FF |  | 2f |
| BL1-MEP-RZR-100 |  | Drainage Riser and Final Connection | 21d | 2015-07-13 | 2015-08-02 | OFF-ENG-MEP-DR1160, OFF-ENG-MEP-DR1170, BL1-FN-7F-1000, BL1-MEP-PL-6F-2000 | 195d | 113d | Cash Flow [10202.1 h]; Excavation [21] | 10,202.1 | MEP | PL & D |  | 2f |
| BL1-MEP-RZR-130 |  | Water Supply Pipes Riser and Final Connection | 21d | 2015-07-13 | 2015-08-02 | OFF-ENG-MEP-WS1150, BL1-FN-7F-1000, BL1-MEP-PL-6F-2020 | 173d | 113d | Cash Flow [8827.35 h]; Excavation [21] | 8,827.35 | MEP | PL & D |  | 2f |
| BL1-MEP-RZR-140 |  | Duct Riser Including Connection | 21d | 2015-07-13 | 2015-08-02 | OFF-ENG-MEP-AC1230, OFF-ENG-MEP-AC1240, OFF-ENG-MEP-AC1250, BL1-FN-7F-1000, BL1-MEP-AC-6F-2020 | 198d | 113d | Cash Flow [30214.1 h]; Ductman [672 h]; Excavation [21] | 30,214.09 | MEP | AC |  | 2f |
| BL1-MEP-RZR-110 |  | Chilled Water Pipes Riser and Final Connection | 21d | 2015-07-19 | 2015-08-08 | OFF-ENG-MEP-AC1220, OFF-ENG-MEP-AC1250, BL1-FN-7F-1000, BL1-MEP-AC-6F-2030 | 178d | 107d | Cash Flow [20988.8 h]; Pipe Fitter - CHW [672 h]; Excavation [21] | 20,988.78 | MEP | AC |  | 2f |

| ID | WBS | Activity | Duration | Start | Finish | Predecessors | Total float | Free float | Resources | Cost | Facade | Structural | Responsibility | MEP Systems | MEP Steps |
| --- | --- | --- | --- | --- | --- | --- | --- | --- | --- | --- | --- | --- | --- | --- | --- |
|  | 1 | **Block 1** |  |  |  |  |  |  |  |  |  |  |  |  |  |
|  | 13 | **External Facade** |  | 2015-04-04 | 2015-08-09 |  |  |  |  |  |  |  |  |  |  |
|  | 1 | **North Elevation** |  | 2015-04-04 | 2015-05-07 |  |  |  |  |  |  |  |  |  |  |
| BL1-XE-NRTH-10 |  | Stone Fixation | 30d | 2015-04-04 | 2015-05-07 | A1600, ENG-AL-APP1000, BL1-ST-7F-1070 | 235d | 0d | Stone CLadding [769]; MNHRS [5000 h]; Cash Flow [112452 h]; Excavation [30] | 112,451.9 | FCD |  |  |  |  |
| BL1-XE-NRTH-20 |  | Aluminum Glazing | 30d | 2015-04-04 | 2015-05-07 | A1350, ENG-AL-APP1000, BL1-ST-7F-1070 | 235d | 0d | Aluminum Cladding [595.9]; MNHRS [3873.6 h]; Cash Flow [172256 h]; Excavation [30] | 172,256 | FCD |  |  |  |  |
|  | 2 | **South Elevation** |  | 2015-05-09 | 2015-06-10 |  |  |  |  |  |  |  |  |  |  |
| BL1-XE-SOTH-10 |  | Stone Fixation | 30d | 2015-05-09 | 2015-06-10 | BL1-XE-NRTH-10, BL1-ST-7F-1070 | 235d | 0d | Stone CLadding [768.9]; MNHRS [4997.9 h]; Cash Flow [112403 h]; Excavation [30] | 112,403.3 | FCD |  |  |  |  |
| BL1-XE-SOTH-20 |  | Aluminum Glazing | 30d | 2015-05-09 | 2015-06-10 | BL1-XE-NRTH-20, BL1-ST-7F-1070 | 235d | 0d | Aluminum Cladding [472]; MNHRS [3067.2 h]; Cash Flow [172952 h]; Excavation [30] | 172,952.3 | FCD |  |  |  |  |
|  | 3 | **West Elevation** |  | 2015-06-11 | 2015-07-10 |  |  |  |  |  |  |  |  |  |  |
| BL1-XE-WEST-10 |  | Stone Fixation | 30d | 2015-06-11 | 2015-07-10 | BL1-XE-SOTH-10, BL1-ST-7F-1070 | 235d | 0d | Stone CLadding [1273]; MNHRS [8273.8 h]; Cash Flow [186079 h]; Excavation [30] | 186,079 | FCD |  |  |  |  |
| BL1-XE-WEST-20 |  | Aluminum Glazing | 30d | 2015-06-11 | 2015-07-10 | BL1-XE-SOTH-20, BL1-ST-7F-1070 | 235d | 0d | Aluminum Cladding [786.3]; MNHRS [5110.95 h]; Cash Flow [288193 h]; Excavation [30] | 288,193.4 | FCD |  |  |  |  |
|  | 4 | **East Elevation** |  | 2015-07-11 | 2015-08-09 |  |  |  |  |  |  |  |  |  |  |
| BL1-XE-EAST-10 |  | Stone Fixation | 30d | 2015-07-11 | 2015-08-09 | BL1-XE-WEST-10, BL1-ST-7F-1070 | 235d |  | Stone CLadding [1272.9]; MNHRS [8274.2 h]; Cash Flow [186089 h]; Excavation [30] | 186,088.6 | FCD |  |  |  |  |
| BL1-XE-EAST-20 |  | Aluminum Glazing | 30d | 2015-07-11 | 2015-08-09 | BL1-XE-WEST-20, BL1-ST-7F-1070 | 235d |  | Aluminum Cladding [783]; MNHRS [5089.8 h]; Cash Flow [287002 h]; Excavation [30] | 287,002 | FCD |  |  |  |  |
|  | 11 | **Lift Installation** |  | 2015-08-09 | 2015-10-07 |  |  |  |  |  |  |  |  |  |  |
| BL1-LFT-10 |  | Lift Installation | 60d | 2015-08-09 | 2015-10-07 | BL1-ST-7F-1070 FS+45d, BL1-FN-7F-1000 FS+70d | 132d | 90d | Cash Flow [365781 h]; Excavation [60] | 365,781.19 |  |  |  |  |  |
|  | 2 | **Block 2** |  | 2014-04-02 | 2016-01-18 |  |  |  |  |  |  |  |  |  |  |
|  | 1 | **Basement 2** |  | 2014-04-02 | 2015-09-16 |  |  |  |  |  |  |  |  |  |  |
|  | 1 | **Structural** |  | 2014-04-02 | 2014-05-29 |  |  |  |  |  |  |  |  |  |  |
| BL2-ST-B2-1000 |  | Blinding | 5d | 2014-04-02 | 2014-04-07 | BL1-ST-B2-1060 | 0d |  | Excavation [5] |  |  | STR |  |  |  |
| BL2-ST-B2-1010 |  | Waterproofing | 12d | 2014-04-08 | 2014-04-21 | BL2-ST-B2-1000 | 0d |  | MNHRS [629.94 h]; Cash Flow [80 h]; Excavation [12] | 80 |  | STR |  |  |  |
| BL2-ST-B2-1020 |  | Formwork | 10d | 2014-04-22 | 2014-05-04 | BL2-ST-B2-1000, BL2-ST-B2-1010 | 0d |  | MNHRS [4068.12 h]; Cash Flow [17885 h]; FW [574.34]; Excavation [10] | 17,884.95 |  | STR |  |  |  |
| BL2-ST-B2-1030 |  | Reinforcement | 21d | 2014-05-05 | 2014-05-28 | BL2-ST-B2-1020 | 0d |  | MNHRS [3429.97 h]; Cash Flow [229321 h]; Reinforcement [182001]; Excavation [21] | 229,321.26 |  | STR |  |  |  |
| BL2-ST-B2-1040 |  | MEP Works in Raft | 5d | 2014-05-24 | 2014-05-28 | ENGMEP8700, OFF-ENG-MEP-DR1090, BL2-ST-B2-1030 FF | 0d |  | Cash Flow [13051 h]; Plumber [312 h]; Excavation [5] | 13,051 |  |  | MEP | PL & D | B.W |
| BL2-ST-B2-1050 |  | Earthing Works | 5d | 2014-05-24 | 2014-05-28 | BL2-ST-B2-1040 SS, ENGMEP8700, ENGMEP8910, PROCMEPELE1810 | 0d |  | Cash Flow [8362.29 h]; Electrician [408 h]; Excavation [5] | 8,362.29 |  |  | MEP | EL | B.W |
| BL2-ST-B2-1060 |  | Concrete | 1d | 2014-05-29 | 2014-05-29 | BL2-ST-B2-1030, BL2-ST-B2-1040, BL2-ST-B2-1050 | 0d |  | MNHRS [19314.8 h]; Cash Flow [322097 h]; Concrete [2333.53]; Excavation [1] | 322,097.15 |  | STR |  |  |  |

| ID | WBS | Activity | Duration | Start | Finish | Predecessors | Total float | Free float | Resources | Cost | Finishing | Responsibility | MEP Systems | MEP Steps | Fix |
| --- | --- | --- | --- | --- | --- | --- | --- | --- | --- | --- | --- | --- | --- | --- | --- |
|  | 2 | **Fiishing** |  | 2014-09-21 | 2015-09-10 |  |  |  |  |  |  |  |  |  |  |
| BL2-FN-B2-1000 |  | Block Works | 21d | 2014-09-21 | 2014-10-19 | BL2-ST-B1-1070 FS+12d, BL2-ST-GF-1070 | 71d | 0d | Cash Flow [7637.84 h]; MNHRS [574.5 h]; BW [150]; Excavation [21] | 7,637.84 | FIN |  |  |  |  |
| BL2-FN-B2-1010 |  | Plaster | 19d | 2014-11-20 | 2014-12-11 | BL2-FN-B2-1000, BL2-MEP-PL-B2-1010, BL2-MEP-PL-B2-1020, BL2-MEP-PL-B2-1000, BL2-MEP-EL-B2-1010, BL2-MEP-EL-B2-1000 | 75d | 0d | MNHRS [591 h]; Cash Flow [6945.75 h]; Plaster [197]; Excavation [19] | 6,945.75 | FIN |  |  |  |  |
| BL2-FN-B2-1020 |  | Paint 1st Coat | 15d | 2014-12-14 | 2014-12-30 | BL2-FN-B2-1010 FS+1d | 112d | 0d | MNHRS [121.5 h]; Cash Flow [733.13 h]; Painting [135]; Excavation [15] | 733.13 | FIN |  |  |  |  |
| BL2-FN-B2-1030 |  | Ceiling Paint | 10d | 2014-12-25 | 2015-01-07 | BL2-FN-B2-1020 SS+10d | 112d | 0d | MNHRS [19.8 h]; Cash Flow [119.45 h]; Painting [22]; Excavation [10] | 119.45 | FIN |  |  |  |  |
| BL2-FN-B2-1040 |  | Waterproofing | 5d | 2015-01-08 | 2015-01-13 | BL2-FN-B2-1030 | 112d | 0d | MNHRS [3.3 h]; Cash Flow [64.7 h]; Waterproofing [11]; Excavation [5] | 64.7 | FIN |  |  |  |  |
| BL2-FN-B2-1050 |  | Wall Tiling | 10d | 2015-01-08 | 2015-01-19 | BL2-FN-B2-1030 | 130d | 18d | MNHRS [620 h]; Cash Flow [2750.98 h]; Tiling [62]; Excavation [10] | 2,750.98 | FIN |  |  |  |  |
| BL2-FN-B2-1060 |  | Flooring Works | 20d | 2015-01-14 | 2015-02-05 | BL2-FN-B2-1040 | 112d | 0d | MNHRS [144.5 h]; Cash Flow [3367.88 h]; Tiling [22]; Excavation [20] | 3,367.88 | FIN |  |  |  |  |
| BL2-FN-B2-1070 |  | False Ceiling | 15d | 2015-02-10 | 2015-02-26 | BL2-FN-B2-1050, BL2-MEP-PL-B2-2040 FF+6d, BL2-MEP-PL-B2-2030 FF+6d, BL2-MEP-AC-B2-2010 FF+6d, BL2-MEP-EL-B2-2000 FF+6d, BL2-MEP-EL-B2-2020 FF+6d, BL2-MEP-EL-B2-2030 FF+6d, BL2-MEP-EL-B2-2050 FF+6d, BL2-MEP-EL-B2-2040 FF+6d, BL2-MEP-EL-B2-2010 FF+6d, BL2-MEP-FF-B2-2010 FF+6d, BL2-MEP-EL-B2-2060 FF+6d | 112d | 0d | Cash Flow [2013.73 h]; False Ceiling [48]; MNHRS [240 h]; Excavation [15] | 2,013.73 | FIN |  |  |  |  |
| BL2-FN-B2-1080 |  | Hand Rails for Stairs | 15d | 2015-02-28 | 2015-03-16 | BL2-FN-B2-1070 | 112d | 0d | Cash Flow [9483.79 h]; Metal Works & Handrail [20]; MNHRS [43 h]; Excavation [15] | 9,483.79 | FIN |  |  |  |  |
| BL2-FN-B2-1090 |  | Doors Installation | 15d | 2015-03-17 | 2015-04-02 | BL2-FN-B2-1080 | 112d | 0d | Cash Flow [25990.1 h]; Excavation [15] | 25,990.11 | FIN |  |  |  |  |
| BL2-FN-B2-1100 |  | Final Paint | 10d | 2015-09-01 | 2015-09-10 | BL2-FN-B2-1060, BL2-MEP-AC-B2-3000 FF+4d, BL2-MEP-EL-B2-3020 FF+4d, BL2-MEP-EL-B2-3030 FF+4d, BL2-MEP-EL-B2-3010 FF+4d, BL2-MEP-EL-B2-3050 FF+4d, BL2-MEP-PL-B2-3010 FF+4d, BL2-MEP-PL-B2-3020 FF+4d, BL2-MEP-FF-B2-3010 FF+4d, BL2-MEP-EL-B2-3060 FF+4d | 130d | 0d | Excavation [10] |  | FIN |  |  |  |  |
|  | 3 | **MEP Work** |  | 2014-10-08 | 2015-09-16 |  |  |  |  |  |  |  |  |  |  |
|  | 1 | **Mechanical System** |  | 2014-10-08 | 2015-09-06 |  |  |  |  |  |  |  |  |  |  |
|  | 2 | **HVAC Works** |  | 2014-10-08 | 2015-05-11 |  |  |  |  |  |  |  |  |  |  |
|  | 1 | **1st Fix** |  | 2014-10-08 | 2014-10-22 |  |  |  |  |  |  |  |  |  |  |
| BL2-MEP-AC-B2-1000 |  | Supports and Hungers Fixing | 12d | 2014-10-08 | 2014-10-22 | OFF-ENG-MEP-AC1130, OFF-PRO-MEP-DR1020, BL2-FN-B2-1000 SS+3d, BL2-FN-B2-1000 FF+3d | 115d | 24d | Cash Flow [118.11 h]; Ductman [192 h]; Excavation [12] | 118.11 |  | MEP | AC | 1st Fix | 1f |
|  | 3 | **2nd Fix** |  | 2014-12-13 | 2015-01-24 |  |  |  |  |  |  |  |  |  |  |
| BL2-MEP-AC-B2-2000 |  | Fresh Air Duct and Extract Duct Installation | 21d | 2014-12-13 | 2015-01-07 | BL2-MEP-AC-B2-1000, OFF-PRO-MEP-AC1020, BL2-FN-B2-1010 | 75d | 0d | Cash Flow [2008.38 h]; Ductman [1008 h]; Excavation [21] | 2,008.38 |  | MEP | AC | 2nd Fix | 2f |
| BL2-MEP-AC-B2-2010 |  | Duct Accessories Installation | 14d | 2015-01-08 | 2015-01-24 | BL2-MEP-AC-B2-2000 | 135d | 20d | Cash Flow [236.17 h]; Pipe Fitter - CHW [448 h]; Excavation [14] | 236.17 |  | MEP | AC | 2nd Fix | 2f |
|  | 4 | **Final Fix** |  | 2015-04-30 | 2015-05-11 |  |  |  |  |  |  |  |  |  |  |
| BL2-MEP-AC-B2-3000 |  | Grills and Diffusers Fixing | 10d | 2015-04-30 | 2015-05-11 | BL2-MEP-AC-B2-2010, OFF-PRO-MEP-AC1140, BL2-FN-B2-1070 | 156d | 0d | Cash Flow [416.81 h]; Ductman [320 h]; Excavation [10] | 416.81 |  | MEP | AC | Final F | ff |
|  | 1 | **Plumbing and Drainage Works** |  | 2014-10-08 | 2015-04-23 |  |  |  |  |  |  |  |  |  |  |
|  | 1 | **1st Fix** |  | 2014-10-08 | 2014-10-22 |  |  |  |  |  |  |  |  |  |  |
| BL2-MEP-PL-B2-1000 |  | Low Level Water Supply Pipes Installation | 12d | 2014-10-08 | 2014-10-22 | OFF-ENG-MEP-WS1090, OFF-PRO-MEP-WS1050, BL2-FN-B2-1000 SS+3d, BL2-FN-B2-1000 FF+3d | 96d | 21d | Cash Flow [713.22 h]; Plumber [42 h]; Excavation [12] | 713.22 |  | MEP | PL & D | 1st Fix | 1f |
| BL2-MEP-PL-B2-1010 |  | Low Level Drainage Pipes Installation | 12d | 2014-10-08 | 2014-10-22 | OFF-ENG-MEP-DR1100, OFF-PRO-MEP-DR1050, BL2-FN-B2-1000 SS+3d, BL2-FN-B2-1000 FF+3d | 96d | 21d | Cash Flow [82.43 h]; Plumber [12.67 h]; Excavation [12] | 82.43 |  | MEP | PL & D | 1st Fix | 1f |
| BL2-MEP-PL-B2-1020 |  | Supports installation for High level Pipes | 12d | 2014-10-08 | 2014-10-22 | OFF-ENG-MEP-DR1100, OFF-ENG-MEP-WS1090, OFF-PRO-MEP-DR1020, BL2-FN-B2-1000 SS+3d, BL2-FN-B2-1000 FF+3d | 96d | 21d | Cash Flow [819.68 h]; Plumber [16.35 h]; Excavation [12] | 819.68 |  | MEP | PL & D | 1st Fix | 1f |

| ID | WBS | Activity | Duration | Start | Finish | Predecessors | Total float | Free float | Resources | Cost | Responsibility | MEP Systems | MEP Steps | Fix |
| --- | --- | --- | --- | --- | --- | --- | --- | --- | --- | --- | --- | --- | --- | --- |
|  | 3 | **2nd Fix** |  | 2014-12-13 | 2015-04-08 |  |  |  |  |  |  |  |  |  |
| BL2-MEP-PL-B2-2000 |  | High Level Drainage Pipes Installation | 21d | 2014-12-13 | 2015-01-07 | BL2-MEP-PL-B2-1020, BL2-MEP-PL-B2-1010, BL2-FN-B2-1010 | 83d | 13d | Cash Flow [6562.53 h]; Plumber [244.38 h]; Excavation [21] | 6,562.53 | MEP | PL & D | 2nd Fix | 2f |
| BL2-MEP-PL-B2-2010 |  | High Level Water Supply Pipes and Fittings Installation | 21d | 2014-12-13 | 2015-01-07 | BL2-MEP-PL-B2-1020, BL2-MEP-PL-B2-1000, OFF-PRO-MEP-WS1020, OFF-PRO-MEP-WS1110, BL2-FN-B2-1010 | 83d | 0d | Cash Flow [1308.6 h]; Plumber [150.02 h]; Excavation [21] | 1,308.6 | MEP | PL & D | 2nd Fix | 2f |
| BL2-MEP-PL-B2-2030 |  | Water Supply Pipes Pressure Test | 6d | 2015-01-08 | 2015-01-14 | BL2-MEP-PL-B2-2010, BL2-MEP-PL-B2-1000 | 143d | 28d | Cash Flow [145.74 h]; Plumber [48 h]; Excavation [6] | 145.74 | MEP | PL & D | 2nd Fix | 2f |
| BL2-MEP-PL-B2-2020 |  | Parking Drain Installation | 6d | 2015-02-07 | 2015-02-12 | OFF-ENG-MEP-DR1100, OFF-PRO-MEP-DR1050, BL2-FN-B2-1060 | 112d | 0d | Cash Flow [547.83 h]; Plumber [48 h]; Excavation [6] | 547.83 | MEP | PL & D | 1st Fix | 2f |
| BL2-MEP-PL-B2-2040 |  | Drainage Pipes Gravity Test | 6d | 2015-02-14 | 2015-02-19 | BL2-MEP-PL-B2-2000, BL2-MEP-PL-B2-1010, BL2-MEP-PL-B2-2020 | 112d | 0d | Cash Flow [820.24 h]; Plumber [48 h]; Excavation [6] | 820.24 | MEP | PL & D | 2nd Fix | 2f |
| BL2-MEP-PL-B2-3000 |  | Manhole Covers Installation | 6d | 2015-02-21 | 2015-02-26 | BL2-MEP-PL-B2-2040, BL2-FN-B2-1060 | 328d | 27d | Cash Flow [488.57 h]; Plumber [37.5 h]; Excavation [6] | 488.57 | MEP | PL & D | Final F | ff |
| BL2-MEP-PL-B2-2050 |  | Sump Pumps Installation Including Connection | 21d | 2015-03-16 | 2015-04-08 | BL2-MEP-PL-B2-2030, OFF-PRO-MEP-DR1130 | 277d | 238d | Cash Flow [2558.28 h]; Plumber [450 h]; Excavation [21] | 2,558.28 | MEP | PL & D | 2nd Fix | 2f |
|  | 4 | **Final Fix** |  | 2015-04-04 | 2015-04-23 |  |  |  |  |  |  |  |  |  |
| BL2-MEP-PL-B2-3010 |  | Sanitary Ware Installation Including Connection | 12d | 2015-04-04 | 2015-04-16 | BL2-MEP-PL-B2-2030, BL2-MEP-PL-B2-2040, OFF-PRO-MEP-WS1140, BL2-FN-B2-1060, BL2-FN-B2-1050, BL2-FN-B2-1070, BL2-FN-B2-1090 | 126d | 0d | Cash Flow [4439.52 h]; Plumber [383.86 h]; Excavation [12] | 4,439.52 | MEP | PL & D | Final F | ff |
| BL2-MEP-PL-B2-3020 |  | Sanitary Ware Accessories Installation | 6d | 2015-04-18 | 2015-04-23 | BL2-MEP-PL-B2-3010 | 204d | 27d | Cash Flow [160.22 h]; Plumber [36.45 h]; Excavation [6] | 160.22 | MEP | PL & D | Final F | ff |
|  | 3 | **Fire Fighting Works** |  | 2014-10-08 | 2015-09-06 |  |  |  |  |  |  |  |  |  |
|  | 1 | **1st Fix** |  | 2014-10-08 | 2014-10-22 |  |  |  |  |  |  |  |  |  |
| BL2-MEP-FF-B2-1000 |  | Supports and Hungers installation | 12d | 2014-10-08 | 2014-10-22 | OFF-ENG-MEP-FF1090, OFF-PRO-MEP-DR1020, BL2-FN-B2-1000 SS+3d, BL2-FN-B2-1000 FF+3d | 177d | 24d | Cash Flow [35.86 h]; Plumber [288 h]; Excavation [12] | 35.86 | MEP | FF | 1st Fix | 1f |
|  | 3 | **2nd Fix** |  | 2014-12-13 | 2015-01-14 |  |  |  |  |  |  |  |  |  |
| BL2-MEP-FF-B2-2000 |  | Fire Fighting Pipes and Fittings Installation | 21d | 2014-12-13 | 2015-01-07 | BL2-MEP-FF-B2-1000, OFF-PRO-MEP-FF1070, BL2-FN-B2-1010 | 137d | 0d | Cash Flow [286.84 h]; Plumber [1008 h]; Excavation [21] | 286.84 | MEP | FF | 2nd Fix | 2f |
| BL2-MEP-FF-B2-2010 |  | Fire Fighting Pipes Pressure Test | 6d | 2015-01-08 | 2015-01-14 | BL2-MEP-FF-B2-2000 | 143d | 31d | Cash Flow [35.86 h]; Plumber [96 h]; Excavation [6] | 35.86 | MEP | FF | 2nd Fix | 2f |
|  | 4 | **Final Fix** |  | 2015-09-01 | 2015-09-06 |  |  |  |  |  |  |  |  |  |
| BL2-MEP-FF-B2-3010 |  | Hose reel Cabinet Installation and Connection | 6d | 2015-09-01 | 2015-09-06 | BL2-MEP-FF-B2-2010, BL2-FN-B2-1070, BL2-MEP-RZR-120 | 99d | 0d | Cash Flow [1330.85 h]; Plumber [192 h]; Excavation [6] | 1,330.85 | MEP | FF | Final F | ff |
| BL2-MEP-FF-B2-3000 |  | Fire Extinguisher Installation | 2d | 2015-09-02 | 2015-09-03 | BL2-MEP-FF-B2-2010, BL2-FN-B2-1050, BL2-FN-B2-1100 SS+1d | 142d | 4d | Cash Flow [1074.99 h]; Plumber [8 h]; Excavation [2] | 1,074.99 | MEP | FF | Final F | ff |
|  | 3 | **Electrical System** |  | 2014-10-16 | 2015-09-16 |  |  |  |  |  |  |  |  |  |
|  | 1 | **1st Fix** |  | 2014-10-16 | 2014-11-19 |  |  |  |  |  |  |  |  |  |
| BL2-MEP-EL-B2-1010 |  | DB's Inclosure Fixing | 6d | 2014-10-16 | 2014-10-22 | ENGMEP8620, ENGMEP8810, BL2-FN-B2-1000 SS+3d, BL2-FN-B2-1000 FF+3d | 96d | 21d | Cash Flow [2130.4 h]; Electrician [96 h]; Excavation [6] | 2,130.4 | MEP | EL | 1st Fix | 1f |
| BL2-MEP-EL-B2-1000 |  | PVC Back Boxes and Conduits Fixing in Wall | 24d | 2014-10-20 | 2014-11-19 | ENGMEP8620, ENGMEP8810, ENGMEP9030, ENGMEP9190, ENGMEP9470, ENGMEP9610, PROCMEPELE1990, PROCMEPELE2080, BL2-FN-B2-1000 FF+3d, BL2-FN-B2-1000 | 71d | 0d | Cash Flow [3307.67 h]; Electrician [384 h]; Excavation [24] | 3,307.67 | MEP | EL | 1st Fix | 1f |

| ID | WBS | Activity | Duration | Start | Finish | Predecessors | Total float | Free float | Resources | Cost | Responsibility | MEP Systems | MEP Steps | Fix | Structural |
| --- | --- | --- | --- | --- | --- | --- | --- | --- | --- | --- | --- | --- | --- | --- | --- |
|  | 2 | **2nd Fix** |  | 2014-12-13 | 2015-02-01 |  |  |  |  |  |  |  |  |  |  |
| BL2-MEP-EL-B2-2000 |  | Cable Tray and Trunking Installation | 21d | 2014-12-13 | 2015-01-07 | PROCMEPELE3340, BL2-FN-B2-1010 | 143d | 7d | Cash Flow [9064.45 h]; Electrician [336 h]; Excavation [21] | 9,064.45 | MEP | EL | 2nd Fix | 2f |  |
| BL2-MEP-EL-B2-2010 |  | Fire Alarm System Wiring | 12d | 2014-12-13 | 2014-12-25 | BL2-MEP-EL-B2-1000, PROCMEPELE8650, BL2-FN-B2-1010 | 158d | 22d | Cash Flow [7111.01 h]; Electrician [192 h]; Excavation [12] | 7,111.01 | MEP | EL | 2nd Fix | 2f |  |
| BL2-MEP-EL-B2-2020 |  | Lighting Wiring | 12d | 2014-12-13 | 2014-12-25 | BL2-MEP-EL-B2-1000, PROCMEPELE5680, BL2-FN-B2-1010 | 158d | 16d | Cash Flow [3566.08 h]; Electrician [241.71 h]; Excavation [12] | 3,566.08 | MEP | EL | 2nd Fix | 2f |  |
| BL2-MEP-EL-B2-2030 |  | Power Points Wiring | 12d | 2014-12-13 | 2014-12-25 | BL2-MEP-EL-B2-1000, PROCMEPELE5680, BL2-FN-B2-1010 | 146d | 4d | Cash Flow [2894.21 h]; Electrician [192 h]; Excavation [12] | 2,894.21 | MEP | EL | 2nd Fix | 2f |  |
| BL2-MEP-EL-B2-2050 |  | Emergency Light Wiring | 8d | 2014-12-13 | 2014-12-21 | BL2-MEP-EL-B2-1000, PROCMEPELE9330, BL2-FN-B2-1010 | 162d | 26d | Cash Flow [1202.03 h]; Electrician [128 h]; Excavation [8] | 1,202.03 | MEP | EL | 2nd Fix | 2f |  |
| BL2-MEP-EL-B2-2040 |  | BMS System Wiring | 8d | 2014-12-23 | 2014-12-31 | BL2-MEP-EL-B2-1000, PROCMEPELE9100, BL2-FN-B2-1010 | 148d | 17d | Cash Flow [15183.4 h]; Electrician [186 h]; Excavation [8] | 15,183.44 | MEP | EL | 2nd Fix | 2f |  |
| BL2-MEP-EL-B2-2060 |  | DB's Installation and Termination | 12d | 2014-12-31 | 2015-01-15 | BL2-MEP-EL-B2-1010, PROCMEPELE8920, BL2-MEP-EL-B2-2030, BL2-FN-B2-1020 | 142d | 0d | Cash Flow [4970.93 h]; Electrician [288 h]; Excavation [12] | 4,970.93 | MEP | EL | 2nd Fix | 2f |  |
| BL2-MEP-EL-B2-2070 |  | SMDB's Installation | 6d | 2014-12-31 | 2015-01-08 | BL2-MEP-EL-B2-1000, PROCMEPELE9380, PROCMEPELE4780, PROCMEPELE7660, BL2-FN-B2-1020 | 151d | 42d | Cash Flow [4970.93 h]; Electrician [48 h]; Excavation [6] | 4,970.93 | MEP | EL | 2nd Fix | 2f |  |
| BL2-MEP-EL-B2-3040 |  | Power Cable Puling | 14d | 2015-01-17 | 2015-02-01 | BL2-MEP-EL-B2-2000, BL2-MEP-EL-B2-2020, BL2-MEP-EL-B2-2030, BL2-MEP-EL-B2-2060 | 195d | 19d | Cash Flow [13632.3 h]; Electrician [168 h]; Excavation [14] | 13,632.33 | MEP | EL | 2nd Fix | 2f |  |
|  | 3 | **Final Fix** |  | 2015-02-28 | 2015-09-16 |  |  |  |  |  |  |  |  |  |  |
| BL2-MEP-EL-B2-3010 |  | Fire Alarm System Detector Installation | 12d | 2015-02-28 | 2015-03-12 | BL2-MEP-EL-B2-2010, BL2-FN-B2-1070 | 197d | 21d | Cash Flow [4034.38 h]; Electrician [192 h]; Excavation [12] | 4,034.38 | MEP | EL | Final F | ff |  |
| BL2-MEP-EL-B2-3020 |  | Lights Fitting Fixing | 14d | 2015-02-28 | 2015-03-15 | BL2-MEP-EL-B2-2020, PROCMEPELE8560, BL2-FN-B2-1070 | 173d | 19d | Cash Flow [7322.66 h]; Electrician [244 h]; Excavation [14] | 7,322.66 | MEP | EL | Final F | ff |  |
| BL2-MEP-EL-B2-3030 |  | Emergency Light Fixing | 8d | 2015-02-28 | 2015-03-08 | BL2-MEP-EL-B2-2050, BL2-FN-B2-1070 | 252d | 25d | Cash Flow [5714.02 h]; Electrician [128 h]; Excavation [8] | 5,714.02 | MEP | EL | Final F | ff |  |
| BL2-MEP-EL-B2-3060 |  | SMDB's Termination and Final Connection | 6d | 2015-02-28 | 2015-03-05 | BL2-MEP-EL-B2-2070, BL2-MEP-EL-B2-3040, BL2-FN-B2-1070 | 255d | 27d | Cash Flow [2785.83 h]; Electrician [192 h]; Excavation [6] | 2,785.82 | MEP | EL | Final F | ff |  |
| BL2-MEP-EL-B2-3050 |  | Sockets and Switches Fixing | 8d | 2015-03-26 | 2015-04-04 | BL2-MEP-EL-B2-2030, PROCMEPELE8830, BL2-MEP-EL-B2-2040, BL2-FN-B2-1070 FF-3d | 222d | 0d | Cash Flow [1166.96 h]; Electrician [128 h]; Excavation [8] | 1,166.96 | MEP | EL | Final F | ff |  |
| BL2-MEP-EL-B2-3000 |  | CO2 System Installation | 6d | 2015-09-11 | 2015-09-16 | BL2-MEP-EL-B2-1000, BL2-FN-B2-1030, BL2-FN-B2-1100, BL1-MEP-EL-B1-3000 | 130d | 0d | Cash Flow [21027.8 h]; Electrician [179.65 h]; Excavation [6] | 21,027.76 | MEP | EL | Final F | ff |  |
|  | 2 | **Basement 1** |  | 2014-05-31 | 2015-09-22 |  |  |  |  |  |  |  |  |  |  |
|  | 1 | **Structural** |  | 2014-05-31 | 2014-08-02 |  |  |  |  |  |  |  |  |  |  |
| BL2-ST-B1-1000 |  | Reinforcement for Verticals | 12d | 2014-05-31 | 2014-06-12 | ENG-STR-BL2-APP100, ENG-STR-BL2-APP110, ENG-STR-BL2-APP120, BL2-ST-B2-1060, ENG-STR-BL3-APP100 | 24d | 0d | MNHRS [946.62 h]; Cash Flow [63289.8 h]; Reinforcement [50230]; Excavation [12] | 63,289.8 |  |  |  |  | STR |
| BL2-ST-B1-1010 |  | MEP Works in Vertical Element | 5d | 2014-06-08 | 2014-06-12 | ENGMEP8620, BL2-ST-B1-1000 FF | 32d | 8d | Cash Flow [1798.55 h]; Electrician [160 h]; Excavation [5] | 1,798.55 | MEP | EL | B.W |  |  |
| BL2-ST-B1-1020 |  | FW for Verticals | 8d | 2014-06-14 | 2014-06-23 | BL2-ST-B1-1000 | 24d | 0d | MNHRS [7525.7 h]; Cash Flow [33086.2 h]; FW [1062.5]; Excavation [8] | 33,086.25 |  |  |  |  | STR |
| BL2-ST-B1-1030 |  | Concrete Verticals | 1d | 2014-06-24 | 2014-06-24 | BL2-ST-B1-1020, BL2-ST-B1-1010 | 24d | 0d | MNHRS [1407.1 h]; Cash Flow [23465.1 h]; Concrete [170]; Excavation [1] | 23,465.1 |  |  |  |  | STR |
| BL2-ST-B1-1040 |  | FW for Slab | 10d | 2014-06-25 | 2014-07-10 | BL2-ST-B1-1030 | 24d | 0d | MNHRS [9905.59 h]; Cash Flow [43549.3 h]; FW [1398.5]; Excavation [10] | 43,549.29 |  |  |  |  | STR |
| BL2-ST-B1-1050 |  | Reinforcement for Slab | 10d | 2014-07-11 | 2014-07-31 | BL2-ST-B1-1040 | 24d | 0d | MNHRS [949.94 h]; Cash Flow [63511.6 h]; Reinforcement [50406]; Excavation [10] | 63,511.56 |  |  |  |  | STR |
| BL2-ST-B1-1060 |  | MEP Works in Slab & Beams | 5d | 2014-07-21 | 2014-07-31 | ENGMEP8620, BL2-ST-B1-1050 FF | 24d | 0d | Cash Flow [3349.02 h]; Electrician [320 h]; Excavation [5] | 3,349.02 | MEP | EL | B.W |  |  |
| BL2-ST-B1-1070 |  | Concrete for Slab | 1d | 2014-08-02 | 2014-08-02 | BL2-ST-B1-1050, BL2-ST-B1-1060 | 24d | 0d | MNHRS [2789.38 h]; Cash Flow [46516.1 h]; Concrete [337]; Excavation [1] | 46,516.11 |  |  |  |  | STR |

| ID | WBS | Activity | Duration | Start | Finish | Predecessors | Total float | Free float | Resources | Cost | Finishing | Responsibility | MEP Systems | MEP Steps | Fix |
| --- | --- | --- | --- | --- | --- | --- | --- | --- | --- | --- | --- | --- | --- | --- | --- |
|  | 2 | **Fiishing** |  | 2014-11-10 | 2015-09-16 |  |  |  |  |  |  |  |  |  |  |
| BL2-FN-B1-1000 |  | Block Works | 21d | 2014-11-10 | 2014-12-03 | BL2-ST-GF-1070 FS+12d, BL2-ST-1F-1070 | 59d | 0d | Cash Flow [7637.84 h]; MNHRS [574.5 h]; BW [150]; Excavation [21] | 7,637.84 | FIN |  |  |  |  |
| BL2-FN-B1-1010 |  | Plaster | 19d | 2014-12-30 | 2015-01-22 | BL2-FN-B1-1000, BL2-MEP-PL-B1-1010, BL2-MEP-PL-B1-1000, BL2-MEP-EL-B1-1010, BL2-MEP-EL-B1-1000 | 62d | 0d | MNHRS [738.9 h]; Cash Flow [8684.33 h]; Plaster [246.3]; Excavation [19] | 8,684.33 | FIN |  |  |  |  |
| BL2-FN-B1-1020 |  | Paint 1st Coat | 15d | 2015-01-24 | 2015-02-09 | BL2-FN-B1-1010 | 94d | 0d | MNHRS [151.8 h]; Cash Flow [916.43 h]; Painting [169]; Excavation [15] | 916.43 | FIN |  |  |  |  |
| BL2-FN-B1-1030 |  | Ceiling Paint | 10d | 2015-02-04 | 2015-02-15 | BL2-FN-B1-1020 SS+10d | 94d | 0d | MNHRS [39.6 h]; Cash Flow [238.95 h]; Painting [44]; Excavation [10] | 238.95 | FIN |  |  |  |  |
| BL2-FN-B1-1040 |  | Waterproofing | 5d | 2015-02-16 | 2015-02-21 | BL2-FN-B1-1030 | 94d | 0d | MNHRS [3.3 h]; Cash Flow [64.35 h]; Waterproofing [11]; Excavation [5] | 64.35 | FIN |  |  |  |  |
| BL2-FN-B1-1050 |  | Wall Tiling | 10d | 2015-02-16 | 2015-02-26 | BL2-FN-B1-1030 | 112d | 18d | MNHRS [776 h]; Cash Flow [3443.52 h]; Tiling [77.6]; Excavation [10] | 3,443.52 | FIN |  |  |  |  |
| BL2-FN-B1-1060 |  | Flooring Works | 20d | 2015-02-22 | 2015-03-16 | BL2-FN-B1-1040 | 94d | 0d | MNHRS [818 h]; Cash Flow [19061.8 h]; Tiling [124.5]; Excavation [20] | 19,061.75 | FIN |  |  |  |  |
| BL2-FN-B1-1070 |  | False Ceiling | 15d | 2015-03-21 | 2015-04-06 | BL2-FN-B1-1050, BL2-MEP-PL-B1-2020 FF+6d, BL2-MEP-PL-B1-2040 FF+6d, BL2-MEP-AC-B1-2010 FF+6d, BL2-MEP-EL-B1-2020 FF+6d, BL2-MEP-EL-B1-2030 FF+6d, BL2-MEP-EL-B1-2000 FF+6d, BL2-MEP-EL-B1-2050 FF+6d, BL2-MEP-EL-B1-2040 FF+6d, BL2-MEP-EL-B1-2010 FF+6d, BL2-MEP-FF-B1-2010 FF+6d, BL2-MEP-EL-B1-2060 FF+6d, BL2-MEP-EL-B1-2070 FF+6d | 94d | 0d | Cash Flow [2013.82 h]; False Ceiling [48]; MNHRS [240 h]; Excavation [15] | 2,013.82 | FIN |  |  |  |  |
| BL2-FN-B1-1080 |  | Hand Rails for Stairs | 15d | 2015-04-07 | 2015-04-23 | BL2-FN-B1-1070 | 94d | 0d | Cash Flow [9483.79 h]; Metal Works & Handrail [20]; MNHRS [43 h]; Excavation [15] | 9,483.79 | FIN |  |  |  |  |
| BL2-FN-B1-1090 |  | Doors Installation | 15d | 2015-04-25 | 2015-05-11 | BL2-FN-B1-1080, BL2-FN-B2-1090 | 94d | 0d | Cash Flow [25990.1 h]; Excavation [15] | 25,990.11 | FIN |  |  |  |  |
| BL2-FN-B1-1100 |  | Final Paint | 10d | 2015-09-07 | 2015-09-16 | BL2-FN-B1-1060, BL2-MEP-AC-B1-3000 FF+4d, BL2-MEP-EL-B1-3020 FF+4d, BL2-MEP-EL-B1-3030 FF+4d, BL2-MEP-EL-B1-3010 FF+4d, BL2-MEP-EL-B1-3050 FF+4d, BL2-MEP-PL-B1-3010 FF+4d, BL2-MEP-PL-B1-3020 FF+4d, BL2-MEP-FF-B1-3010 FF+4d | 130d | 0d | Excavation [10] |  | FIN |  |  |  |  |
|  | 3 | **MEP Work** |  | 2014-11-20 | 2015-09-22 |  |  |  |  |  |  |  |  |  |  |
|  | 1 | **Mechanical System** |  | 2014-11-20 | 2015-09-12 |  |  |  |  |  |  |  |  |  |  |
|  | 2 | **HVAC Works** |  | 2014-11-24 | 2015-05-23 |  |  |  |  |  |  |  |  |  |  |
|  | 1 | **1st Fix** |  | 2014-11-24 | 2014-12-07 |  |  |  |  |  |  |  |  |  |  |
| BL2-MEP-AC-B1-1000 |  | Supports and Hungers Fixing | 12d | 2014-11-24 | 2014-12-07 | BL2-MEP-AC-B2-1000, OFF-ENG-MEP-AC1140, BL2-FN-B1-1000 SS+3d, BL2-FN-B1-1000 FF+3d | 100d | 19d | Cash Flow [118.11 h]; Ductman [192 h]; Excavation [12] | 118.11 |  | MEP | AC | 1st Fix | 1f |
|  | 3 | **2nd Fix** |  | 2015-01-24 | 2015-03-04 |  |  |  |  |  |  |  |  |  |  |
| BL2-MEP-AC-B1-2000 |  | Fresh Air Duct and Extract Duct Installation | 21d | 2015-01-24 | 2015-02-16 | BL2-MEP-AC-B1-1000, BL2-MEP-AC-B2-2000, BL2-FN-B1-1010 | 62d | 0d | Cash Flow [2008.38 h]; Ductman [1008 h]; Excavation [21] | 2,008.38 |  | MEP | AC | 2nd Fix | 2f |
| BL2-MEP-AC-B1-2010 |  | Duct Accessories Installation | 14d | 2015-02-17 | 2015-03-04 | BL2-MEP-AC-B1-1000, BL2-MEP-AC-B1-2000, BL2-MEP-AC-B2-2010 | 116d | 8d | Cash Flow [236.17 h]; Pipe Fitter - CHW [448 h]; Excavation [14] | 236.17 |  | MEP | AC | 2nd Fix | 2f |
|  | 4 | **Final Fix** |  | 2015-05-12 | 2015-05-23 |  |  |  |  |  |  |  |  |  |  |
| BL2-MEP-AC-B1-3000 |  | Grills and Diffusers Fixing | 10d | 2015-05-12 | 2015-05-23 | BL2-MEP-AC-B1-2010, BL2-MEP-AC-B2-3000, BL2-FN-B1-1070 | 156d | 0d | Cash Flow [416.81 h]; Ductman [320 h]; Excavation [10] | 416.81 |  | MEP | AC | Final F | ff |
|  | 1 | **Plumbing and Drainage Works** |  | 2014-11-20 | 2015-06-01 |  |  |  |  |  |  |  |  |  |  |
|  | 1 | **1st Fix** |  | 2014-11-20 | 2014-12-07 |  |  |  |  |  |  |  |  |  |  |
| BL2-MEP-PL-B1-1000 |  | Low Level Water Supply Pipes Installation | 12d | 2014-11-20 | 2014-12-03 | BL2-MEP-PL-B2-1000, OFF-ENG-MEP-WS1100, BL2-FN-B1-1000 SS+3d, BL2-FN-B1-1000 FF | 84d | 22d | Cash Flow [713.22 h]; Plumber [42 h]; Excavation [12] | 713.22 |  | MEP | PL & D | 1st Fix | 1f |
| BL2-MEP-PL-B1-1010 |  | Low Level Drainage Pipes Installation | 12d | 2014-11-24 | 2014-12-07 | BL2-MEP-PL-B2-1010, OFF-ENG-MEP-DR1110, BL2-FN-B1-1000 SS+3d, BL2-FN-B1-1000 FF+3d | 81d | 19d | Cash Flow [82.43 h]; Plumber [12.67 h]; Excavation [12] | 82.43 |  | MEP | PL & D | 1st Fix | 1f |
| BL2-MEP-PL-B1-1020 |  | Supports installation for High level Pipes | 12d | 2014-11-24 | 2014-12-07 | BL2-MEP-PL-B2-1020, OFF-ENG-MEP-DR1110, OFF-ENG-MEP-WS1100, BL2-FN-B1-1000 SS+3d, BL2-FN-B1-1000 FF+3d | 108d | 22d | Cash Flow [819.68 h]; Plumber [16.35 h]; Excavation [12] | 819.68 |  | MEP | PL & D | 1st Fix | 1f |

| ID | WBS | Activity | Duration | Start | Finish | Predecessors | Total float | Free float | Resources | Cost | Responsibility | MEP Systems | MEP Steps | Fix |
| --- | --- | --- | --- | --- | --- | --- | --- | --- | --- | --- | --- | --- | --- | --- |
|  | 3 | **2nd Fix** |  | 2015-01-24 | 2015-04-06 |  |  |  |  |  |  |  |  |  |
| BL2-MEP-PL-B1-2000 |  | High Level Drainage Pipes Installation | 21d | 2015-01-24 | 2015-02-16 | BL2-MEP-PL-B1-1020, BL2-MEP-PL-B1-1010, BL2-MEP-PL-B2-2000, BL2-FN-B1-1010 | 70d | 1d | Cash Flow [6562.53 h]; Plumber [244.38 h]; Excavation [21] | 6,562.53 | MEP | PL & D | 2nd Fix | 2f |
| BL2-MEP-PL-B1-2010 |  | High Level Water Supply Pipes and Fittings Installation | 21d | 2015-01-24 | 2015-02-16 | BL2-MEP-PL-B1-1020, BL2-MEP-PL-B1-1000, BL2-MEP-PL-B2-2010, BL2-FN-B1-1010 | 70d | 0d | Cash Flow [1308.6 h]; Plumber [150.02 h]; Excavation [21] | 1,308.6 | MEP | PL & D | 2nd Fix | 2f |
| BL2-MEP-PL-B1-2020 |  | Water Supply Pipes Pressure Test | 6d | 2015-02-17 | 2015-02-23 | BL2-MEP-PL-B1-2010, BL2-MEP-PL-B1-1000, BL2-MEP-PL-B2-2030 | 124d | 16d | Cash Flow [145.74 h]; Plumber [48 h]; Excavation [6] | 145.74 | MEP | PL & D | 2nd Fix | 2f |
| BL2-MEP-PL-B1-2030 |  | Parking Drain Installation | 6d | 2015-03-17 | 2015-03-23 | BL2-MEP-PL-B2-2020, OFF-ENG-MEP-DR1110, BL2-FN-B1-1060 | 94d | 0d | Cash Flow [547.83 h]; Plumber [48 h]; Excavation [6] | 547.83 | MEP | PL & D | 1st Fix | 2f |
| BL2-MEP-PL-B1-2040 |  | Drainage Pipes Gravity Test | 6d | 2015-03-24 | 2015-03-30 | BL2-MEP-PL-B1-2000, BL2-MEP-PL-B1-1010, BL2-MEP-PL-B1-2030, BL2-MEP-PL-B2-2040 | 94d | 0d | Cash Flow [820.24 h]; Plumber [48 h]; Excavation [6] | 820.24 | MEP | PL & D | 2nd Fix | 2f |
| BL2-MEP-PL-B1-3000 |  | Manhole Covers Installation | 6d | 2015-03-31 | 2015-04-06 | BL2-MEP-PL-B1-2040, BL2-MEP-PL-B2-3000, BL2-FN-B1-1060 | 301d | 240d | Cash Flow [488.57 h]; Plumber [37.5 h]; Excavation [6] | 488.57 | MEP | PL & D | Final F | ff |
|  | 4 | **Final Fix** |  | 2015-05-12 | 2015-06-01 |  |  |  |  |  |  |  |  |  |
| BL2-MEP-PL-B1-3010 |  | Sanitary Ware Installation Including Connection | 12d | 2015-05-12 | 2015-05-25 | BL2-MEP-PL-B1-2020, BL2-MEP-PL-B1-2040, BL2-MEP-PL-B2-3010, BL2-FN-B1-1060, BL2-FN-B1-1050, BL2-FN-B1-1070, BL2-FN-B1-1090 | 105d | 0d | Cash Flow [4439.52 h]; Plumber [383.86 h]; Excavation [12] | 4,439.52 | MEP | PL & D | Final F | ff |
| BL2-MEP-PL-B1-3020 |  | Sanitary Ware Accessories Installation | 6d | 2015-05-26 | 2015-06-01 | BL2-MEP-PL-B1-3010, BL2-MEP-PL-B2-3020 | 177d | 25d | Cash Flow [160.22 h]; Plumber [36.45 h]; Excavation [6] | 160.22 | MEP | PL & D | Final F | ff |
|  | 3 | **Fire Fighting Works** |  | 2014-11-24 | 2015-09-12 |  |  |  |  |  |  |  |  |  |
|  | 1 | **1st Fix** |  | 2014-11-24 | 2014-12-07 |  |  |  |  |  |  |  |  |  |
| BL2-MEP-FF-B1-1000 |  | Supports and Hungers installation | 12d | 2014-11-24 | 2014-12-07 | BL2-MEP-FF-B2-1000, OFF-ENG-MEP-FF1100, BL2-FN-B1-1000 SS+3d, BL2-FN-B1-1000 FF+3d | 162d | 38d | Cash Flow [35.86 h]; Plumber [288 h]; Excavation [12] | 35.86 | MEP | FF | 1st Fix | 1f |
|  | 3 | **2nd Fix** |  | 2015-01-24 | 2015-02-23 |  |  |  |  |  |  |  |  |  |
| BL2-MEP-FF-B1-2000 |  | Fire Fighting Pipes and Fittings Installation | 21d | 2015-01-24 | 2015-02-16 | BL2-MEP-FF-B1-1000, BL2-MEP-FF-B2-2000, BL2-FN-B1-1010 | 124d | 0d | Cash Flow [286.84 h]; Plumber [1008 h]; Excavation [21] | 286.84 | MEP | FF | 2nd Fix | 2f |
| BL2-MEP-FF-B1-2010 |  | Fire Fighting Pipes Pressure Test | 6d | 2015-02-17 | 2015-02-23 | BL2-MEP-FF-B1-2000 | 124d | 30d | Cash Flow [35.86 h]; Plumber [96 h]; Excavation [6] | 35.86 | MEP | FF | 2nd Fix | 2f |
|  | 4 | **Final Fix** |  | 2015-09-07 | 2015-09-12 |  |  |  |  |  |  |  |  |  |
| BL2-MEP-FF-B1-3010 |  | Hose reel Cabinet Installation and Connection | 6d | 2015-09-07 | 2015-09-12 | BL2-MEP-FF-B1-2010, BL2-MEP-FF-B2-3010, BL2-FN-B1-1050, BL2-FN-B1-1070 | 99d | 0d | Cash Flow [1330.85 h]; Plumber [192 h]; Excavation [6] | 1,330.85 | MEP | FF | Final F | ff |
| BL2-MEP-FF-B1-3000 |  | Fire Extinguisher Installation | 2d | 2015-09-08 | 2015-09-09 | BL2-MEP-FF-B1-2010, BL2-MEP-FF-B2-3000, BL2-FN-B1-1050, BL2-FN-B1-1100 SS+1d | 138d | 4d | Cash Flow [1074.99 h]; Plumber [8 h]; Excavation [2] | 1,074.99 | MEP | FF | Final F | ff |
|  | 3 | **Electrical System** |  | 2014-12-04 | 2015-09-22 |  |  |  |  |  |  |  |  |  |
|  | 1 | **1st Fix** |  | 2014-12-04 | 2014-12-29 |  |  |  |  |  |  |  |  |  |
| BL2-MEP-EL-B1-1000 |  | PVC Back Boxes and Conduits Fixing in Wall | 22d | 2014-12-04 | 2014-12-29 | ENGMEP9620, ENGMEP9550, ENGMEP9480, ENGMEP9200, ENGMEP9040, ENGMEP8820, ENGMEP8620, PROCMEPELE1990, PROCMEPELE2080, BL2-FN-B1-1000, BL2-MEP-EL-B2-1000 | 59d | 0d | Cash Flow [3307.67 h]; Electrician [384 h]; Excavation [22] | 3,307.67 | MEP | EL | 1st Fix | 1f |
| BL2-MEP-EL-B1-1010 |  | DB's Inclosure Fixing | 6d | 2014-12-04 | 2014-12-10 | ENGMEP8820, ENGMEP8620, BL2-FN-B1-1000, BL2-MEP-EL-B2-1010 | 78d | 16d | Cash Flow [2130.4 h]; Electrician [96 h]; Excavation [6] | 2,130.4 | MEP | EL | 1st Fix | 1f |
|  | 2 | **2nd Fix** |  | 2015-01-24 | 2015-03-16 |  |  |  |  |  |  |  |  |  |
| BL2-MEP-EL-B1-2000 |  | Cable Tray and Trunking Installation | 21d | 2015-01-24 | 2015-02-16 | PROCMEPELE3340, BL2-FN-B1-1010, BL2-MEP-EL-B2-2000 | 130d | 1d | Cash Flow [9064.45 h]; Electrician [336 h]; Excavation [21] | 9,064.45 | MEP | EL | 2nd Fix | 2f |
| BL2-MEP-EL-B1-2010 |  | Fire Alarm System Wiring | 12d | 2015-01-24 | 2015-02-05 | BL2-MEP-EL-B1-1000, PROCMEPELE8650, BL2-FN-B1-1010, BL2-MEP-EL-B2-2010 | 139d | 10d | Cash Flow [7111.01 h]; Electrician [192 h]; Excavation [12] | 7,111.01 | MEP | EL | 2nd Fix | 2f |
| BL2-MEP-EL-B1-2020 |  | Lighting Wiring | 12d | 2015-01-24 | 2015-02-05 | BL2-MEP-EL-B1-1000, PROCMEPELE5680, BL2-FN-B1-1010, BL2-MEP-EL-B2-2020 | 139d | 10d | Cash Flow [3566.08 h]; Electrician [241.71 h]; Excavation [12] | 3,566.08 | MEP | EL | 2nd Fix | 2f |
| BL2-MEP-EL-B1-2030 |  | Power Points Wiring | 12d | 2015-01-24 | 2015-02-05 | BL2-MEP-EL-B1-1000, PROCMEPELE5680, BL2-FN-B1-1010, BL2-MEP-EL-B2-2030 | 139d | 10d | Cash Flow [2894.21 h]; Electrician [192 h]; Excavation [12] | 2,894.21 | MEP | EL | 2nd Fix | 2f |
| BL2-MEP-EL-B1-2040 |  | BMS System Wiring | 8d | 2015-01-24 | 2015-02-01 | BL2-MEP-EL-B1-1000, PROCMEPELE9100, BL2-FN-B1-1010, BL2-MEP-EL-B2-2040 | 131d | 25d | Cash Flow [15183.4 h]; Electrician [186 h]; Excavation [8] | 15,183.44 | MEP | EL | 2nd Fix | 2f |
| BL2-MEP-EL-B1-2050 |  | Emergency Light Wiring | 8d | 2015-01-24 | 2015-02-01 | BL2-MEP-EL-B1-1000, PROCMEPELE9330, BL2-FN-B1-1010, BL2-MEP-EL-B2-2050 | 143d | 14d | Cash Flow [1202.03 h]; Electrician [128 h]; Excavation [8] | 1,202.03 | MEP | EL | 2nd Fix | 2f |
| BL2-MEP-EL-B1-2060 |  | DB's Installation and Termination | 12d | 2015-02-10 | 2015-02-23 | BL2-MEP-EL-B1-1010, PROCMEPELE8920, BL2-MEP-EL-B2-2060, BL2-FN-B1-1020 | 124d | 0d | Cash Flow [4970.93 h]; Electrician [288 h]; Excavation [12] | 4,970.93 | MEP | EL | 2nd Fix | 2f |
| BL2-MEP-EL-B1-3040 |  | Power Cable Puling | 14d | 2015-02-24 | 2015-03-11 | BL2-MEP-EL-B1-2000, BL2-MEP-EL-B1-2020, BL2-MEP-EL-B1-2030, BL2-MEP-EL-B1-2060, BL2-MEP-EL-B2-3040 | 176d | 8d | Cash Flow [13632.3 h]; Electrician [168 h]; Excavation [14] | 13,632.33 | MEP | EL | 2nd Fix | 2f |
| BL2-MEP-EL-B1-2070 |  | SMDB's , MDB's Installation | 12d | 2015-03-03 | 2015-03-16 | BL2-MEP-EL-B1-1000, PROCMEPELE9190, BL2-MEP-EL-B1-2040, BL2-FN-B1-1020, BL2-MEP-EL-B2-2070 | 106d | 0d | Cash Flow [4196.6 h]; Electrician [336 h]; Excavation [12] | 4,196.6 | MEP | EL | 2nd Fix | 2f |

| ID | WBS | Activity | Duration | Start | Finish | Predecessors | Total float | Free float | Resources | Cost | Responsibility | MEP Systems | MEP Steps | Fix | Structural | Finishing |
| --- | --- | --- | --- | --- | --- | --- | --- | --- | --- | --- | --- | --- | --- | --- | --- | --- |
|  | 3 | **Final Fix** |  | 2015-04-05 | 2015-09-22 |  |  |  |  |  |  |  |  |  |  |  |
| BL2-MEP-EL-B1-3050 |  | Sockets and Switches Fixing | 8d | 2015-04-05 | 2015-04-13 | BL2-MEP-EL-B1-2030, PROCMEPELE8830, BL2-FN-B1-1070 FF-3d, BL2-MEP-EL-B2-3050 | 222d | 23d | Cash Flow [1166.96 h]; Electrician [128 h]; Excavation [8] | 1,166.96 | MEP | EL | Final F | ff |  |  |
| BL2-MEP-EL-B1-3010 |  | Fire Alarm System Detector Installation | 12d | 2015-04-07 | 2015-04-20 | BL2-MEP-EL-B1-2010, BL2-FN-B1-1070, BL2-MEP-EL-B2-3010 | 176d | 17d | Cash Flow [4034.38 h]; Electrician [192 h]; Excavation [12] | 4,034.38 | MEP | EL | Final F | ff |  |  |
| BL2-MEP-EL-B1-3020 |  | Lights Fitting Fixing | 14d | 2015-04-07 | 2015-04-22 | BL2-MEP-EL-B1-2020, PROCMEPELE8560, BL2-FN-B1-1070, BL2-MEP-EL-B2-3020 | 154d | 15d | Cash Flow [7322.66 h]; Electrician [244 h]; Excavation [14] | 7,322.66 | MEP | EL | Final F | ff |  |  |
| BL2-MEP-EL-B1-3030 |  | Emergency Light Fixing | 8d | 2015-04-07 | 2015-04-15 | BL2-MEP-EL-B1-2050, BL2-FN-B1-1070, BL2-MEP-EL-B2-3030 | 227d | 21d | Cash Flow [5714.02 h]; Electrician [128 h]; Excavation [8] | 5,714.02 | MEP | EL | Final F | ff |  |  |
| BL2-MEP-EL-B1-3060 |  | SMDB's , MDB's Termination and Final Connection | 12d | 2015-04-07 | 2015-04-20 | BL2-MEP-EL-B1-2070, BL2-MEP-EL-B1-3040, BL2-MEP-EL-B2-3060, BL2-FN-B1-1070 | 228d | 17d | Cash Flow [20725.6 h]; Electrician [384 h]; Excavation [12] | 20,725.64 | MEP | EL | Final F |  |  |  |
| BL2-MEP-EL-B1-3000 |  | CO2 System Installation | 6d | 2015-09-17 | 2015-09-22 | BL2-MEP-EL-B2-3000, BL2-MEP-EL-B1-1000, BL2-FN-B1-1030, BL2-FN-B1-1100 | 130d | 73d | Cash Flow [21027.8 h]; Electrician [179.65 h]; Excavation [6] | 21,027.76 | MEP | EL | Final F | ff |  |  |
|  | 3 | **Ground Floor** |  | 2014-08-03 | 2015-09-22 |  |  |  |  |  |  |  |  |  |  |  |
|  | 1 | **Structural** |  | 2014-08-03 | 2014-09-20 |  |  |  |  |  |  |  |  |  |  |  |
| BL2-ST-GF-1000 |  | Reinforcement for Verticals | 12d | 2014-08-03 | 2014-08-16 | BL2-ST-B1-1070 | 24d | 0d | MNHRS [946.62 h]; Cash Flow [63289.8 h]; Reinforcement [50230]; Excavation [12] | 63,289.8 |  |  |  |  | STR |  |
| BL2-ST-GF-1010 |  | MEP Works in Vertical Element | 5d | 2014-08-11 | 2014-08-16 | ENGMEP8630, BL2-ST-GF-1000 FF | 32d | 8d | Cash Flow [1798.55 h]; Electrician [160 h]; Excavation [5] | 1,798.55 | MEP | EL | B.W |  |  |  |
| BL2-ST-GF-1020 |  | FW for Verticals | 8d | 2014-08-17 | 2014-08-25 | BL2-ST-GF-1000 | 24d | 0d | MNHRS [9363.74 h]; Cash Flow [41167.1 h]; FW [1322]; Excavation [8] | 41,167.08 |  |  |  |  | STR |  |
| BL2-ST-GF-1030 |  | Concrete Verticals | 1d | 2014-08-26 | 2014-08-26 | BL2-ST-GF-1020, BL2-ST-GF-1010 | 24d | 0d | MNHRS [1750.44 h]; Cash Flow [29190.6 h]; Concrete [211.4]; Excavation [1] | 29,190.58 |  |  |  |  | STR |  |
| BL2-ST-GF-1040 |  | FW for Slab | 10d | 2014-08-27 | 2014-09-07 | BL2-ST-GF-1030 | 24d | 0d | MNHRS [9094.58 h]; Cash Flow [39983.8 h]; FW [1284]; Excavation [10] | 39,983.76 |  |  |  |  | STR |  |
| BL2-ST-GF-1050 |  | Reinforcement for Slab | 10d | 2014-09-08 | 2014-09-18 | BL2-ST-GF-1040 | 24d | 0d | MNHRS [949.94 h]; Cash Flow [63511.6 h]; Reinforcement [50406]; Excavation [10] | 63,511.56 |  |  |  |  | STR |  |
| BL2-ST-GF-1060 |  | MEP Works in Slab & Beams | 5d | 2014-09-14 | 2014-09-18 | ENGMEP8630, BL2-ST-GF-1050 FF | 24d | 0d | Cash Flow [3349.02 h]; Electrician [320 h]; Excavation [5] | 3,349.02 | MEP | EL | B.W |  |  |  |
| BL2-ST-GF-1070 |  | Concrete for Slab | 1d | 2014-09-20 | 2014-09-20 | BL2-ST-GF-1050, BL2-ST-GF-1060 | 24d | 0d | MNHRS [2785.82 h]; Cash Flow [46456.8 h]; Concrete [336.5]; Excavation [1] | 46,456.76 |  |  |  |  | STR |  |
|  | 2 | **Fiishing** |  | 2014-12-20 | 2015-09-22 |  |  |  |  |  |  |  |  |  |  |  |
| BL2-FN-GF-1000 |  | Block Works | 21d | 2014-12-20 | 2015-01-14 | ENG-BW-APP-BL21000, ENG-BW-APP-BL21010, ENG-BW-APP-BL21020, ENG-BW-APP-BL21030, ENG-WA-APP-BL21000, ENG-WA-APP-BL21010, ENG-WA-APP-BL21020, ENG-WA-APP-BL21030, BL2-ST-1F-1070 FS+12d, BL2-ST-2F-1070 | 65d | 0d | Cash Flow [38993.1 h]; MNHRS [2933 h]; BW [765.8]; Excavation [21] | 38,993.07 |  |  |  |  |  | FIN |
| BL2-FN-GF-1010 |  | Plaster | 19d | 2015-01-27 | 2015-02-17 | BL2-FN-GF-1000, BL2-MEP-PL-GF-1010, BL2-MEP-PL-GF-1000, BL2-MEP-EL-GF-1000, BL2-MEP-EL-GF-1010 | 60d | 0d | MNHRS [4594.7 h]; Cash Flow [54002.3 h]; Plaster [1531.5]; Excavation [19] | 54,002.3 |  |  |  |  |  | FIN |
| BL2-FN-GF-1020 |  | Paint 1st Coat | 15d | 2015-02-18 | 2015-03-07 | BL2-FN-GF-1010 | 80d | 0d | MNHRS [459.4 h]; Cash Flow [8317.4 h]; Painting [1531.5]; Excavation [15] | 8,317.4 |  |  |  |  |  | FIN |
| BL2-FN-GF-1030 |  | Ceiling Paint | 10d | 2015-03-02 | 2015-03-12 | BL2-FN-GF-1020 SS+10d | 80d | 0d | MNHRS [43 h]; Cash Flow [259.68 h]; Painting [48]; Excavation [10] | 259.68 |  |  |  |  |  | FIN |
| BL2-FN-GF-1040 |  | Waterproofing | 8d | 2015-03-14 | 2015-03-22 | BL2-FN-GF-1030 | 80d | 0d | MNHRS [7 h]; Cash Flow [131.28 h]; Waterproofing [22.32]; Excavation [8] | 131.28 |  |  |  |  |  | FIN |
| BL2-FN-GF-1050 |  | Wall Tiling | 10d | 2015-03-14 | 2015-03-24 | BL2-FN-GF-1030 | 105d | 25d | MNHRS [1797 h]; Cash Flow [7983.32 h]; Tiling [180]; Excavation [10] | 7,983.32 |  |  |  |  |  | FIN |
| BL2-FN-GF-1060 |  | Flooring Works | 24d | 2015-03-23 | 2015-04-19 | BL2-FN-GF-1040, ENG-FT-APP-BL21000, ENG-FT-APP-BL21010, ENG-FT-APP-BL21020 | 80d | 0d | MNHRS [2093.8 h]; Cash Flow [48795.2 h]; Tiling [319]; Excavation [24] | 48,795.24 |  |  |  |  |  | FIN |
| BL2-FN-GF-1070 |  | False Ceiling | 15d | 2015-04-23 | 2015-05-10 | BL2-FN-GF-1050, ENG-FC-APP-BL21000, ENG-FC-APP-BL21010, ENG-FC-APP-BL21020, ENG-FC-APP-BL21030, BL2-MEP-AC-GF-2070 FF+6d, BL2-MEP-PL-GF-2020 FF+6d, BL2-MEP-PL-GF-2040 FF+6d, BL2-MEP-AC-GF-2020 FF+6d, BL2-MEP-EL-GF-2030 FF+6d, BL2-MEP-EL-GF-2040 FF+6d, BL2-MEP-EL-GF-2000 FF+6d, BL2-MEP-EL-GF-2060 FF+6d, BL2-MEP-EL-GF-2010 FF+6d, BL2-MEP-EL-GF-2070 FF+6d | 80d | 0d | Cash Flow [44765.4 h]; False Ceiling [1067]; MNHRS [5335 h]; Excavation [15] | 44,765.42 |  |  |  |  |  | FIN |
| BL2-FN-GF-1080 |  | Hand Rails for Stairs | 15d | 2015-05-11 | 2015-05-27 | BL2-FN-GF-1070, ENG-SC-APP-BL21000 | 80d | 0d | Cash Flow [9483.79 h]; Metal Works & Handrail [20]; MNHRS [43 h]; Excavation [15] | 9,483.79 |  |  |  |  |  | FIN |
| BL2-FN-GF-1090 |  | Doors Installation/Alumium Doors | 15d | 2015-05-28 | 2015-06-12 | BL2-FN-GF-1080, ENG-DS-APP-BL21010, ENG-DS-APP-BL21020, ENG-DS-APP-BL21030, ENG-DS-APP-BL21000, BL2-FN-B1-1090 | 80d | 0d | Cash Flow [32214 h]; Excavation [15] | 32,213.96 |  |  |  |  |  | FIN |
| BL2-FN-GF-1100 |  | Final Paint | 10d | 2015-09-13 | 2015-09-22 | BL2-FN-GF-1060, BL2-MEP-AC-GF-3000 FF+4d, BL2-MEP-EL-GF-3040 FF+4d, BL2-MEP-EL-GF-3000 FF+4d, BL2-MEP-EL-GF-3010 FF+4d, BL2-MEP-EL-GF-3020 FF+4d, BL2-MEP-EL-GF-3050 FF+4d, BL2-MEP-PL-GF-3000 FF+4d, BL2-MEP-PL-GF-3010 FF+4d, BL2-MEP-FF-GF-3010 FF+4d | 134d | 0d | Excavation [10] |  |  |  |  |  |  | FIN |

| ID | WBS | Activity | Duration | Start | Finish | Predecessors | Total float | Free float | Resources | Cost | Responsibility | MEP Systems | MEP Steps | Fix |
| --- | --- | --- | --- | --- | --- | --- | --- | --- | --- | --- | --- | --- | --- | --- |
|  | 3 | **MEP Work** |  | 2014-12-30 | 2015-09-18 |  |  |  |  |  |  |  |  |  |
|  | 1 | **Mechanical System** |  | 2014-12-30 | 2015-09-18 |  |  |  |  |  |  |  |  |  |
|  | 2 | **HVAC Works** |  | 2014-12-30 | 2015-06-05 |  |  |  |  |  |  |  |  |  |
|  | 1 | **1st Fix** |  | 2014-12-30 | 2015-01-14 |  |  |  |  |  |  |  |  |  |
| BL2-MEP-AC-GF-1000 |  | Supports and Hungers Fixing | 12d | 2014-12-30 | 2015-01-14 | BL2-MEP-AC-B1-1000, OFF-ENG-MEP-AC1150, BL2-FN-GF-1000 SS, BL2-FN-GF-1000 FF | 89d | 16d | Cash Flow [326.47 h]; Ductman [192 h]; Excavation [12] | 326.47 | MEP | AC | 1st Fix | 1f |
|  | 3 | **2nd Fix** |  | 2015-02-18 | 2015-04-04 |  |  |  |  |  |  |  |  |  |
| BL2-MEP-AC-GF-2000 |  | Fresh Air Duct and Extract Duct Installation and Insulation | 21d | 2015-02-18 | 2015-03-14 | BL2-MEP-AC-GF-1000, OFF-PRO-MEP-AC1020, OFF-PRO-MEP-AC1050, BL2-FN-GF-1010, BL2-MEP-AC-B1-2000 | 61d | 0d | Cash Flow [5549.65 h]; Ductman [1008 h]; Excavation [21] | 5,549.65 | MEP | AC | 2nd Fix | 2f |
| BL2-MEP-AC-GF-2010 |  | Chilled Water Pipes and Fittings Installation | 21d | 2015-02-18 | 2015-03-14 | BL2-MEP-AC-GF-1000, OFF-PRO-MEP-AC1170, BL2-FN-GF-1010 | 60d | 0d | Cash Flow [5230.19 h]; Pipe Fitter - CHW [420 h]; Excavation [21] | 5,230.19 | MEP | AC | 2nd Fix | 2f |
| BL2-MEP-AC-GF-2050 |  | FCU's Installation | 8d | 2015-02-18 | 2015-02-26 | BL2-MEP-AC-GF-1000, OFF-PRO-MEP-AC1320, BL2-FN-GF-1010 | 127d | 19d | Cash Flow [5992.06 h]; Pipe Fitter - CHW [96 h]; Excavation [8] | 5,992.06 | MEP | AC | 2nd Fix | 2f |
| BL2-MEP-AC-GF-2020 |  | Duct Accessories Installation | 14d | 2015-03-15 | 2015-03-30 | BL2-MEP-AC-GF-2000, OFF-PRO-MEP-AC1080, OFF-PRO-MEP-AC1110, BL2-MEP-AC-B1-2010 | 109d | 23d | Cash Flow [652.97 h]; Pipe Fitter - CHW [448 h]; Excavation [14] | 652.97 | MEP | AC | 2nd Fix | 2f |
| BL2-MEP-AC-GF-2030 |  | Chilled Water Pipes Pressure Test | 6d | 2015-03-15 | 2015-03-21 | BL2-MEP-AC-GF-2010 | 108d | 0d | Cash Flow [581.12 h]; Pipe Fitter - CHW [48 h]; Excavation [6] | 581.12 | MEP | AC | 2nd Fix | 2f |
| BL2-MEP-AC-GF-2040 |  | Chilled Water Pipes Insulation | 12d | 2015-03-22 | 2015-04-04 | BL2-MEP-AC-GF-2030, OFF-PRO-MEP-AC1050 | 192d | 25d | Cash Flow [1658.21 h]; Pipe Fitter - CHW [192 h]; Excavation [12] | 1,658.21 | MEP | AC | 2nd Fix | 2f |
| BL2-MEP-AC-GF-2060 |  | Valve Package Installation | 6d | 2015-03-22 | 2015-03-28 | BL2-MEP-AC-GF-2050, BL2-MEP-AC-GF-2030 | 108d | 0d | Cash Flow [2380.49 h]; Pipe Fitter - CHW [48 h]; Excavation [6] | 2,380.49 | MEP | AC | 2nd Fix | 2f |
| BL2-MEP-AC-GF-2070 |  | FCU's Drain Pipes Installation | 3d | 2015-03-29 | 2015-03-31 | BL2-MEP-AC-GF-2050, BL2-MEP-AC-GF-2060 | 108d | 28d | Cash Flow [516.93 h]; Pipe Fitter - CHW [24 h]; Excavation [3] | 516.93 | MEP | AC | 2nd Fix | 2f |
|  | 4 | **Final Fix** |  | 2015-05-24 | 2015-06-05 |  |  |  |  |  |  |  |  |  |
| BL2-MEP-AC-GF-3000 |  | Grills and Diffusers Fixing | 12d | 2015-05-24 | 2015-06-05 | BL2-MEP-AC-GF-2020, BL2-MEP-AC-B1-3000, OFF-PRO-MEP-AC1140, BL2-FN-GF-1070 | 156d | 7d | Cash Flow [11538.6 h]; Ductman [384 h]; Excavation [12] | 11,538.61 | MEP | AC | Final F | ff |
|  | 1 | **Plumbing and Drainage Works** |  | 2015-01-05 | 2015-07-02 |  |  |  |  |  |  |  |  |  |
|  | 1 | **1st Fix** |  | 2015-01-05 | 2015-01-18 |  |  |  |  |  |  |  |  |  |
| BL2-MEP-PL-GF-1000 |  | Low Level Water Supply Pipes Installation | 12d | 2015-01-05 | 2015-01-18 | BL2-MEP-PL-B1-1000, OFF-ENG-MEP-WS1110, BL2-FN-GF-1000 SS+3d, BL2-FN-GF-1000 FF+3d | 67d | 7d | Cash Flow [713.22 h]; Plumber [42 h]; Excavation [12] | 713.22 | MEP | PL & D | 1st Fix | 1f |
| BL2-MEP-PL-GF-1010 |  | Low Level Drainage Pipes Installation | 12d | 2015-01-05 | 2015-01-18 | BL2-MEP-PL-B1-1010, OFF-ENG-MEP-DR1120, BL2-FN-GF-1000 SS+3d, BL2-FN-GF-1000 FF+3d | 67d | 7d | Cash Flow [82.43 h]; Plumber [12.67 h]; Excavation [12] | 82.43 | MEP | PL & D | 1st Fix | 1f |
| BL2-MEP-PL-GF-1020 |  | Supports installation for High level Pipes | 12d | 2015-01-05 | 2015-01-18 | BL2-MEP-PL-B1-1020, OFF-ENG-MEP-DR1120, OFF-ENG-MEP-WS1110, BL2-FN-GF-1000 SS+3d, BL2-FN-GF-1000 FF+3d | 95d | 22d | Cash Flow [819.68 h]; Plumber [16.35 h]; Excavation [12] | 819.68 | MEP | PL & D | 1st Fix | 1f |
|  | 3 | **2nd Fix** |  | 2015-02-18 | 2015-05-03 |  |  |  |  |  |  |  |  |  |
| BL2-MEP-PL-GF-2000 |  | High Level Water Supply Pipes and Fittings Installation | 21d | 2015-02-18 | 2015-03-14 | BL2-MEP-PL-GF-1020, BL2-MEP-PL-GF-1000, BL2-MEP-PL-B1-2010, BL2-FN-GF-1010 | 69d | 0d | Cash Flow [1308.6 h]; Plumber [150.02 h]; Excavation [21] | 1,308.6 | MEP | PL & D | 2nd Fix | 2f |
| BL2-MEP-PL-GF-2010 |  | High Level Drainage Pipes Installation | 21d | 2015-02-18 | 2015-03-14 | BL2-MEP-PL-GF-1020, BL2-MEP-PL-GF-1010, BL2-MEP-PL-B1-2000, BL2-FN-GF-1010 | 69d | 16d | Cash Flow [6562.53 h]; Plumber [244.38 h]; Excavation [21] | 6,562.53 | MEP | PL & D | 2nd Fix | 2f |
| BL2-MEP-PL-GF-2020 |  | Water Supply Pipes Pressure Test | 6d | 2015-03-15 | 2015-03-21 | BL2-MEP-PL-GF-2000, BL2-MEP-PL-GF-1000, BL2-MEP-PL-B1-2020 | 117d | 31d | Cash Flow [145.74 h]; Plumber [48 h]; Excavation [6] | 145.74 | MEP | PL & D | 2nd Fix | 2f |
| BL2-MEP-PL-GF-2030 |  | Floor Drain Installation | 6d | 2015-04-20 | 2015-04-26 | BL2-MEP-PL-B1-2030, OFF-ENG-MEP-DR1120, BL2-FN-GF-1060 | 80d | 0d | Cash Flow [548.14 h]; Plumber [6 h]; Excavation [6] | 548.14 | MEP | PL & D | 1st Fix | 2f |
| BL2-MEP-PL-GF-2040 |  | Drainage Pipes Gravity Test | 6d | 2015-04-27 | 2015-05-03 | BL2-MEP-PL-GF-2010, BL2-MEP-PL-GF-1010, BL2-MEP-PL-GF-2030, BL2-MEP-PL-B1-2040 | 80d | 0d | Cash Flow [820.24 h]; Plumber [48 h]; Excavation [6] | 820.24 | MEP | PL & D | 2nd Fix | 2f |

| ID | WBS | Activity | Duration | Start | Finish | Predecessors | Total float | Free float | Resources | Cost | Responsibility | MEP Systems | MEP Steps | Fix |
| --- | --- | --- | --- | --- | --- | --- | --- | --- | --- | --- | --- | --- | --- | --- |
|  | 4 | **Final Fix** |  | 2015-06-13 | 2015-07-02 |  |  |  |  |  |  |  |  |  |
| BL2-MEP-PL-GF-3000 |  | Sanitary Ware Installation Including Connection | 14d | 2015-06-13 | 2015-06-26 | BL2-MEP-PL-GF-2020, BL2-MEP-PL-GF-2040, BL2-MEP-PL-B1-3010, BL2-FN-GF-1060, BL2-FN-GF-1050, BL2-FN-GF-1070, BL2-FN-GF-1090 | 88d | 0d | Cash Flow [4439.52 h]; Plumber [383.86 h]; Excavation [14] | 4,439.52 | MEP | PL & D | Final F | ff |
| BL2-MEP-PL-GF-3010 |  | Sanitary Ware Accessories Installation | 6d | 2015-06-27 | 2015-07-02 | BL2-MEP-PL-GF-3000, BL2-MEP-PL-B1-3020 | 152d | 24d | Cash Flow [160.22 h]; Plumber [36.45 h]; Excavation [6] | 160.22 | MEP | PL & D | Final F | ff |
|  | 3 | **Fire Fighting Works** |  | 2015-09-13 | 2015-09-18 |  |  |  |  |  |  |  |  |  |
|  | 4 | **Final Fix** |  | 2015-09-13 | 2015-09-18 |  |  |  |  |  |  |  |  |  |
| BL2-MEP-FF-GF-3010 |  | Hose reel Cabinet Installation and Connection | 6d | 2015-09-13 | 2015-09-18 | BL2-MEP-FF-B1-3010, OFF-ENG-MEP-FF1110, BL2-FN-GF-1050, BL2-FN-GF-1070 | 99d | 0d | Cash Flow [1330.85 h]; Plumber [192 h]; Excavation [6] | 1,330.85 | MEP | FF | Final F | ff |
| BL2-MEP-FF-GF-3000 |  | Fire Extinguisher Installation | 2d | 2015-09-14 | 2015-09-15 | BL2-MEP-FF-B1-3000, OFF-ENG-MEP-FF1110, BL2-FN-GF-1050, BL2-FN-GF-1100 SS+1d | 134d | 4d | Cash Flow [1074.99 h]; Plumber [8 h]; Excavation [2] | 1,074.99 | MEP | FF | Final F | ff |
|  | 3 | **Electrical System** |  | 2014-12-30 | 2015-06-06 |  |  |  |  |  |  |  |  |  |
|  | 1 | **1st Fix** |  | 2014-12-30 | 2015-01-26 |  |  |  |  |  |  |  |  |  |
| BL2-MEP-EL-GF-1000 |  | PVC Back Boxes and Conduits Fixing in Wall | 22d | 2014-12-30 | 2015-01-26 | ENGMEP8630, ENGMEP8830, ENGMEP9050, ENGMEP9210, ENGMEP9490, ENGMEP9630, PROCMEPELE1990, PROCMEPELE2080, BL2-FN-GF-1000 SS+3d, BL2-FN-GF-1000 FF+3d, BL2-MEP-EL-B1-1000 | 59d | 0d | Cash Flow [3307.67 h]; Electrician [384 h]; Excavation [22] | 3,307.67 | MEP | EL | 1st Fix | 1f |
| BL2-MEP-EL-GF-1010 |  | DB's Inclosure Fixing | 6d | 2015-01-12 | 2015-01-18 | ENGMEP8630, ENGMEP8830, BL2-FN-GF-1000 SS+3d, BL2-MEP-EL-B1-1010, BL2-FN-GF-1000 FF+3d | 67d | 7d | Cash Flow [2130.4 h]; Electrician [96 h]; Excavation [6] | 2,130.4 | MEP | EL | 1st Fix | 1f |
|  | 2 | **2nd Fix** |  | 2015-02-18 | 2015-04-06 |  |  |  |  |  |  |  |  |  |
| BL2-MEP-EL-GF-2000 |  | Cable Tray and Trunking Installation | 14d | 2015-02-18 | 2015-03-05 | PROCMEPELE3340, BL2-FN-GF-1010, BL2-MEP-EL-B1-2000 | 130d | 13d | Cash Flow [9064.45 h]; Electrician [336 h]; Excavation [14] | 9,064.45 | MEP | EL | 2nd Fix | 2f |
| BL2-MEP-EL-GF-2010 |  | Fire Alarm System Wiring | 12d | 2015-02-18 | 2015-03-03 | BL2-MEP-EL-GF-1000, PROCMEPELE8650, BL2-FN-GF-1010, BL2-MEP-EL-B1-2010 | 132d | 25d | Cash Flow [7111.01 h]; Electrician [192 h]; Excavation [12] | 7,111.01 | MEP | EL | 2nd Fix | 2f |
| BL2-MEP-EL-GF-2030 |  | Lighting Wiring | 12d | 2015-02-18 | 2015-03-03 | BL2-MEP-EL-GF-1000, PROCMEPELE5680, BL2-FN-GF-1010, BL2-MEP-EL-B1-2020 | 132d | 15d | Cash Flow [3566.08 h]; Electrician [241.71 h]; Excavation [12] | 3,566.08 | MEP | EL | 2nd Fix | 2f |
| BL2-MEP-EL-GF-2040 |  | Power Points Wiring | 12d | 2015-02-18 | 2015-03-03 | BL2-MEP-EL-GF-1000, PROCMEPELE5680, BL2-FN-GF-1010, BL2-MEP-EL-B1-2030 | 132d | 15d | Cash Flow [2894.21 h]; Electrician [192 h]; Excavation [12] | 2,894.21 | MEP | EL | 2nd Fix | 2f |
| BL2-MEP-EL-GF-2050 |  | Low Current System Wiring | 14d | 2015-02-18 | 2015-03-05 | BL2-MEP-EL-GF-1000, PROCMEPELE7030, PROCMEPELE6400, PROCMEPELE6490, BL2-FN-GF-1010, PROCMEPELE6760 | 294d | 56d | Cash Flow [38217.8 h]; Electrician [244 h]; Excavation [14] | 38,217.78 | MEP | EL |  | 2f |
| BL2-MEP-EL-GF-2060 |  | Emergency Light Wiring | 8d | 2015-02-18 | 2015-02-26 | BL2-MEP-EL-GF-1000, PROCMEPELE9330, BL2-FN-GF-1010, BL2-MEP-EL-B1-2050 | 136d | 29d | Cash Flow [1202.03 h]; Electrician [128 h]; Excavation [8] | 1,202.03 | MEP | EL | 2nd Fix | 2f |
| BL2-MEP-EL-GF-2070 |  | DB's Installation and Termination | 12d | 2015-03-08 | 2015-03-21 | BL2-MEP-EL-GF-1010, PROCMEPELE8920, BL2-MEP-EL-B1-2060, BL2-FN-GF-1020 | 117d | 0d | Cash Flow [4970.93 h]; Electrician [288 h]; Excavation [12] | 4,970.93 | MEP | EL | 2nd Fix | 2f |
| BL2-MEP-EL-GF-2020 |  | SMDB's Installation | 6d | 2015-03-17 | 2015-03-23 | BL2-MEP-EL-GF-1000, BL2-FN-GF-1020, BL2-MEP-EL-B1-2070 | 252d | 23d | Cash Flow [4196.6 h]; Electrician [45 h]; Excavation [6] | 4,196.6 | MEP | EL | 2nd Fix | 2f |
| BL2-MEP-EL-GF-3060 |  | Power Cable Puling | 14d | 2015-03-22 | 2015-04-06 | BL2-MEP-EL-GF-2000, BL2-MEP-EL-GF-2030, BL2-MEP-EL-GF-2040, BL2-MEP-EL-GF-2070, BL2-MEP-EL-B1-3040 | 168d | 23d | Cash Flow [6361.76 h]; Electrician [168 h]; Excavation [14] | 6,361.76 | MEP | EL | 2nd Fix | 2f |
|  | 3 | **Final Fix** |  | 2015-05-11 | 2015-06-06 |  |  |  |  |  |  |  |  |  |
| BL2-MEP-EL-GF-3000 |  | Lights Fitting Fixing | 14d | 2015-05-11 | 2015-05-26 | BL2-MEP-EL-GF-2030, PROCMEPELE8560, BL2-FN-GF-1070, BL2-MEP-EL-B1-3020 | 139d | 16d | Cash Flow [7322.66 h]; Electrician [244 h]; Excavation [14] | 7,322.66 | MEP | EL | Final F | ff |
| BL2-MEP-EL-GF-3010 |  | Emergency Light Fixing | 8d | 2015-05-11 | 2015-05-19 | BL2-MEP-EL-GF-2060, BL2-FN-GF-1070, BL2-MEP-EL-B1-3030 | 206d | 22d | Cash Flow [5714.02 h]; Electrician [128 h]; Excavation [8] | 5,714.02 | MEP | EL | Final F | ff |
| BL2-MEP-EL-GF-3020 |  | Fire Alarm System Detector Installation | 12d | 2015-05-11 | 2015-05-24 | BL2-MEP-EL-GF-2010, BL2-FN-GF-1070, BL2-MEP-EL-B1-3010 | 159d | 18d | Cash Flow [4034.38 h]; Electrician [192 h]; Excavation [12] | 4,034.38 | MEP | EL | Final F | ff |
| BL2-MEP-EL-GF-3030 |  | Despature for Low Current System Installation | 14d | 2015-05-11 | 2015-05-26 | BL2-MEP-EL-GF-2050, PROCMEPELE7480, BL2-FN-GF-1070, BL2-FN-GF-1020 | 238d | 0d | Cash Flow [72738.2 h]; Electrician [336 h]; Excavation [14] | 72,738.16 | MEP | EL |  | ff |
| BL2-MEP-EL-GF-3050 |  | Sockets and Switches Fixing | 8d | 2015-05-11 | 2015-05-19 | BL2-MEP-EL-GF-2040, PROCMEPELE8830, BL2-FN-GF-1070, BL2-MEP-EL-B1-3050 | 199d | 22d | Cash Flow [1166.96 h]; Electrician [128 h]; Excavation [8] | 1,166.96 | MEP | EL | Final F | ff |
| BL2-MEP-EL-GF-3070 |  | SMDB's Termination and Final Connection | 6d | 2015-05-11 | 2015-05-17 | BL2-MEP-EL-GF-2020, BL2-MEP-EL-B1-3060, BL2-MEP-EL-GF-3060, BL2-FN-GF-1070 | 211d | 24d | Cash Flow [2785.83 h]; Electrician [192 h]; Excavation [6] | 2,785.82 | MEP | EL | Final F | ff |
| BL2-MEP-EL-GF-3040 |  | Low Current System Outlet installation and Connection | 10d | 2015-05-27 | 2015-06-06 | BL2-MEP-EL-GF-2050, BL2-MEP-EL-GF-3030 | 238d | 104d | Cash Flow [3860.79 h]; Electrician [80 h]; Excavation [10] | 3,860.79 | MEP | EL |  | ff |

| ID | WBS | Activity | Duration | Start | Finish | Predecessors | Total float | Free float | Resources | Cost | Structural | Responsibility | MEP Systems | MEP Steps | Finishing | Fix |
| --- | --- | --- | --- | --- | --- | --- | --- | --- | --- | --- | --- | --- | --- | --- | --- | --- |
|  | 4 | **1st Floor** |  | 2014-09-21 | 2015-09-28 |  |  |  |  |  |  |  |  |  |  |  |
|  | 1 | **Structural** |  | 2014-09-21 | 2014-11-09 |  |  |  |  |  |  |  |  |  |  |  |
| BL2-ST-1F-1000 |  | Reinforcement for Verticals | 10d | 2014-09-21 | 2014-10-01 | ENG-STR-BL2-APP130, ENG-STR-BL2-APP140, ENG-STR-BL2-APP150, ENG-STR-BL2-APP160, ENG-STR-BL2-APP170, BL2-ST-GF-1070 | 24d | 0d | MNHRS [716.08 h]; Cash Flow [47875.7 h]; Reinforcement [37996.5]; Excavation [10] | 47,875.66 | STR |  |  |  |  |  |
| BL2-ST-1F-1010 |  | MEP Works in Vertical Element | 5d | 2014-09-27 | 2014-10-01 | ENGMEP8650, BL2-ST-1F-1000 FF | 32d | 8d | Cash Flow [1798.55 h]; Electrician [160 h]; Excavation [5] | 1,798.55 |  | MEP | EL | B.W |  |  |
| BL2-ST-1F-1020 |  | FW for Verticals | 8d | 2014-10-02 | 2014-10-15 | BL2-ST-1F-1000 | 24d | 0d | MNHRS [9331.86 h]; Cash Flow [41026.9 h]; FW [1317.5]; Excavation [8] | 41,026.95 | STR |  |  |  |  |  |
| BL2-ST-1F-1030 |  | Concrete Verticals | 1d | 2014-10-16 | 2014-10-16 | BL2-ST-1F-1020, BL2-ST-1F-1010 | 24d | 0d | MNHRS [2046.92 h]; Cash Flow [34134.8 h]; Concrete [247.3]; Excavation [1] | 34,134.82 | STR |  |  |  |  |  |
| BL2-ST-1F-1040 |  | FW for Slab | 8d | 2014-10-18 | 2014-10-27 | BL2-ST-1F-1030 | 24d | 0d | MNHRS [1081.29 h]; Cash Flow [4753.83 h]; FW [153]; Excavation [8] | 4,753.83 | STR |  |  |  |  |  |
| BL2-ST-1F-1050 |  | Reinforcement for Slab | 8d | 2014-10-28 | 2014-11-08 | BL2-ST-1F-1040 | 24d | 0d | MNHRS [1542.3 h]; Cash Flow [103116 h]; Reinforcement [81838]; Excavation [8] | 103,115.9 | STR |  |  |  |  |  |
| BL2-ST-1F-1060 |  | MEP Works in Slab & Beams | 5d | 2014-11-02 | 2014-11-08 | ENGMEP8650, BL2-ST-1F-1050 FF | 24d | 0d | Cash Flow [3349.02 h]; Electrician [320 h]; Excavation [5] | 3,349.02 |  | MEP | EL | B.W |  |  |
| BL2-ST-1F-1070 |  | Concrete for Slab | 1d | 2014-11-09 | 2014-11-09 | BL2-ST-1F-1050, BL2-ST-1F-1060 | 24d | 0d | MNHRS [3569.08 h]; Cash Flow [59518.5 h]; Concrete [431.2]; Excavation [1] | 59,518.54 | STR |  |  |  |  |  |
|  | 2 | **Fiishing** |  | 2015-01-20 | 2015-09-28 |  |  |  |  |  |  |  |  |  |  |  |
| BL2-FN-1F-1000 |  | Block Works | 21d | 2015-01-20 | 2015-02-12 | BL2-ST-2F-1070 FS+12d, BL2-ST-3F-1070 | 44d | 0d | Cash Flow [26499 h]; MNHRS [1993 h]; BW [520]; Excavation [21] | 26,498.96 |  |  |  |  | FIN |  |
| BL2-FN-1F-1010 |  | Plaster | 19d | 2015-03-11 | 2015-04-01 | BL2-FN-1F-1000, BL2-MEP-PL-1F-1000, BL2-MEP-PL-1F-1010, BL2-MEP-EL-1F-1000, BL2-MEP-EL-1F-1010 | 44d | 0d | MNHRS [3122 h]; Cash Flow [36698.9 h]; Plaster [1041]; Excavation [19] | 36,698.89 |  |  |  |  | FIN |  |
| BL2-FN-1F-1020 |  | Paint 1st Coat | 15d | 2015-04-02 | 2015-04-19 | BL2-FN-1F-1010 | 65d | 0d | MNHRS [312.2 h]; Cash Flow [5651.89 h]; Painting [1040.8]; Excavation [15] | 5,651.89 |  |  |  |  | FIN |  |
| BL2-FN-1F-1030 |  | Ceiling Paint | 10d | 2015-04-14 | 2015-04-25 | BL2-FN-1F-1020 SS+10d | 65d | 0d | MNHRS [29.34 h]; Cash Flow [177.03 h]; Painting [32.6]; Excavation [10] | 177.03 |  |  |  |  | FIN |  |
| BL2-FN-1F-1040 |  | Waterproofing | 5d | 2015-04-26 | 2015-04-30 | BL2-FN-1F-1030 | 65d | 0d | MNHRS [7 h]; Cash Flow [131.28 h]; Waterproofing [22.32]; Excavation [5] | 131.28 |  |  |  |  | FIN |  |
| BL2-FN-1F-1050 |  | Wall Tiling | 10d | 2015-04-26 | 2015-05-06 | BL2-FN-1F-1030 | 83d | 18d | MNHRS [1663.8 h]; Cash Flow [7382.46 h]; Tiling [167]; Excavation [10] | 7,382.46 |  |  |  |  | FIN |  |
| BL2-FN-1F-1060 |  | Flooring Works | 20d | 2015-05-02 | 2015-05-24 | BL2-FN-1F-1040 | 65d | 0d | MNHRS [1318 h]; Cash Flow [30728.5 h]; Tiling [200.7]; Excavation [20] | 30,728.51 |  |  |  |  | FIN |  |
| BL2-FN-1F-1070 |  | False Ceiling | 15d | 2015-05-28 | 2015-06-12 | BL2-FN-1F-1050, BL2-MEP-AC-1F-2070 FF+6d, BL2-MEP-PL-1F-2020 FF+6d, BL2-MEP-PL-1F-2040 FF+6d, BL2-MEP-AC-1F-2030 FF+6d, BL2-MEP-EL-1F-2060 FF+6d, BL2-MEP-EL-1F-2000 FF+6d, BL2-MEP-EL-1F-2010 FF+6d, BL2-MEP-EL-1F-2020 FF+6d, BL2-MEP-EL-1F-2030 FF+6d, BL2-MEP-EL-1F-2070 FF+6d | 65d | 0d | Cash Flow [44765.4 h]; False Ceiling [1067]; MNHRS [5335 h]; Excavation [15] | 44,765.42 |  |  |  |  | FIN |  |
| BL2-FN-1F-1080 |  | Hand Rails for Stairs | 15d | 2015-06-13 | 2015-06-27 | BL2-FN-1F-1070 | 65d | 0d | Cash Flow [9483.79 h]; Metal Works & Handrail [20]; MNHRS [43 h]; Excavation [15] | 9,483.79 |  |  |  |  | FIN |  |
| BL2-FN-1F-1090 |  | Doors Installation | 15d | 2015-06-28 | 2015-07-12 | BL2-FN-1F-1080, BL2-FN-GF-1090 | 65d | 0d | Cash Flow [25990.1 h]; Excavation [15] | 25,990.11 |  |  |  |  | FIN |  |
| BL2-FN-1F-1100 |  | Final Paint | 10d | 2015-09-19 | 2015-09-28 | BL2-FN-1F-1060, BL2-MEP-EL-1F-3040 FF+4d, BL2-MEP-EL-1F-3000 FF+4d, BL2-MEP-EL-1F-3010 FF+4d, BL2-MEP-EL-1F-3020 FF+4d, BL2-MEP-EL-1F-3050 FF+4d, BL2-MEP-PL-1F-3000 FF+4d, BL2-MEP-PL-1F-3010 FF+4d, BL2-MEP-FF-1F-3010 FF+4d, BL2-MEP-EL-1F-3070 FF+4d, BL2-MEP-EL-1F-3030 FF+4d | 130d | 0d | Excavation [10] |  |  |  |  |  | FIN |  |
|  | 5 | **MEP Work** |  | 2015-02-03 | 2015-09-24 |  |  |  |  |  |  |  |  |  |  |  |
|  | 1 | **Mechanical System** |  | 2015-02-03 | 2015-09-24 |  |  |  |  |  |  |  |  |  |  |  |
|  | 2 | **HVAC Works** |  | 2015-02-03 | 2015-06-24 |  |  |  |  |  |  |  |  |  |  |  |
|  | 1 | **1st Fix** |  | 2015-02-03 | 2015-02-16 |  |  |  |  |  |  |  |  |  |  |  |
| BL2-MEP-AC-1F-1000 |  | Supports and Hungers Fixing | 12d | 2015-02-03 | 2015-02-16 | BL2-MEP-AC-GF-1000, OFF-ENG-MEP-AC1180, BL2-FN-1F-1000 SS+3d, BL2-FN-1F-1000 FF+3d | 82d | 19d | Cash Flow [326.47 h]; Ductman [192 h]; Excavation [12] | 326.47 |  | MEP | AC | 1st Fix |  | 1f |

| ID | WBS | Activity | Duration | Start | Finish | Predecessors | Total float | Free float | Resources | Cost | Responsibility | MEP Systems | MEP Steps | Fix |
| --- | --- | --- | --- | --- | --- | --- | --- | --- | --- | --- | --- | --- | --- | --- |
|  | 3 | **2nd Fix** |  | 2015-04-02 | 2015-05-17 |  |  |  |  |  |  |  |  |  |
| BL2-MEP-AC-1F-2000 |  | Duct Installation and Insulation | 21d | 2015-04-02 | 2015-04-26 | BL2-MEP-AC-1F-1000, BL2-MEP-AC-GF-2000, BL2-FN-1F-1010 | 45d | 0d | Cash Flow [4329.94 h]; Ductman [263 h]; Excavation [21] | 4,329.94 | MEP | AC | 2nd Fix | 2f |
| BL2-MEP-AC-1F-2010 |  | Chilled Water Pipes and Fittings Installation | 21d | 2015-04-02 | 2015-04-26 | BL2-MEP-AC-1F-1000, BL2-MEP-AC-GF-2010, BL2-FN-1F-1010 | 44d | 0d | Cash Flow [5230.19 h]; Pipe Fitter - CHW [420 h]; Excavation [21] | 5,230.19 | MEP | AC | 2nd Fix | 2f |
| BL2-MEP-AC-1F-2020 |  | FCU's Installation | 8d | 2015-04-02 | 2015-04-11 | BL2-MEP-AC-1F-1000, BL2-MEP-AC-GF-2050, BL2-FN-1F-1010 | 105d | 4d | Cash Flow [5992.06 h]; Pipe Fitter - CHW [96 h]; Excavation [8] | 5,992.06 | MEP | AC | 2nd Fix | 2f |
| BL2-MEP-AC-1F-2030 |  | Duct Accessories Installation | 14d | 2015-04-27 | 2015-05-12 | BL2-MEP-AC-1F-2000, BL2-MEP-AC-GF-2020 | 87d | 7d | Cash Flow [652.97 h]; Pipe Fitter - CHW [448 h]; Excavation [14] | 652.97 | MEP | AC | 2nd Fix | 2f |
| BL2-MEP-AC-1F-2040 |  | Chilled Water Pipes Pressure Test | 6d | 2015-04-27 | 2015-05-03 | BL2-MEP-AC-1F-2010 | 86d | 0d | Cash Flow [581.12 h]; Pipe Fitter - CHW [48 h]; Excavation [6] | 581.12 | MEP | AC | 2nd Fix | 2f |
| BL2-MEP-AC-1F-2050 |  | Chilled Water Pipes Insulation | 12d | 2015-05-04 | 2015-05-17 | BL2-MEP-AC-1F-2040, BL2-MEP-AC-GF-2040 | 167d | 9d | Cash Flow [1658.21 h]; Pipe Fitter - CHW [192 h]; Excavation [12] | 1,658.21 | MEP | AC | 2nd Fix | 2f |
| BL2-MEP-AC-1F-2060 |  | Valve Package Installation | 6d | 2015-05-04 | 2015-05-10 | BL2-MEP-AC-1F-2020, BL2-MEP-AC-1F-2040 | 86d | 0d | Cash Flow [2380.49 h]; Pipe Fitter - CHW [48 h]; Excavation [6] | 2,380.49 | MEP | AC | 2nd Fix | 2f |
| BL2-MEP-AC-1F-2070 |  | FCU's Drain Pipes Installation | 3d | 2015-05-11 | 2015-05-13 | BL2-MEP-AC-1F-2020, BL2-MEP-AC-1F-2060, BL2-MEP-AC-GF-2070 | 86d | 18d | Cash Flow [516.93 h]; Pipe Fitter - CHW [24 h]; Excavation [3] | 516.93 | MEP | AC | 2nd Fix | 2f |
|  | 4 | **Final Fix** |  | 2015-06-13 | 2015-06-24 |  |  |  |  |  |  |  |  |  |
| BL2-MEP-AC-1F-3000 |  | Grills and Diffusers Fixing | 12d | 2015-06-13 | 2015-06-24 | BL2-MEP-AC-1F-2030, BL2-MEP-AC-1F-2000, BL2-MEP-AC-GF-3000, BL2-FN-1F-1070 | 149d | 0d | Cash Flow [11538.6 h]; Ductman [384 h]; Excavation [12] | 11,538.61 | MEP | AC | Final F | ff |
|  | 1 | **Plumbing and Drainage Works** |  | 2015-02-14 | 2015-08-01 |  |  |  |  |  |  |  |  |  |
|  | 1 | **1st Fix** |  | 2015-02-14 | 2015-02-26 |  |  |  |  |  |  |  |  |  |
| BL2-MEP-PL-1F-1000 |  | Low Level Water Supply Pipes Installation | 12d | 2015-02-14 | 2015-02-26 | BL2-MEP-PL-GF-1000, OFF-ENG-MEP-WS1130, BL2-FN-1F-1000 | 54d | 10d | Cash Flow [713.22 h]; Plumber [42 h]; Excavation [12] | 713.22 | MEP | PL & D | 1st Fix | 1f |
| BL2-MEP-PL-1F-1010 |  | Low Level Drainage Pipes Installation | 12d | 2015-02-14 | 2015-02-26 | BL2-MEP-PL-GF-1010, OFF-ENG-MEP-DR1140, BL2-FN-1F-1000 | 54d | 10d | Cash Flow [2279.46 h]; Plumber [12.67 h]; Excavation [12] | 2,279.46 | MEP | PL & D | 1st Fix | 1f |
| BL2-MEP-PL-1F-1020 |  | Supports installation for High level Pipes | 12d | 2015-02-14 | 2015-02-26 | BL2-MEP-PL-GF-1020, OFF-ENG-MEP-DR1140, OFF-ENG-MEP-WS1130, BL2-FN-1F-1000 | 81d | 10d | Cash Flow [819.68 h]; Plumber [16.35 h]; Excavation [12] | 819.68 | MEP | PL & D | 1st Fix | 1f |
|  | 3 | **2nd Fix** |  | 2015-04-02 | 2015-06-06 |  |  |  |  |  |  |  |  |  |
| BL2-MEP-PL-1F-2000 |  | High Level Water Supply Pipes and Fittings Installation | 21d | 2015-04-02 | 2015-04-26 | BL2-MEP-PL-1F-1020, BL2-MEP-PL-1F-1000, BL2-MEP-PL-GF-2000, BL2-FN-1F-1010 | 53d | 0d | Cash Flow [1308.6 h]; Plumber [150.02 h]; Excavation [21] | 1,308.6 | MEP | PL & D | 2nd Fix | 2f |
| BL2-MEP-PL-1F-2010 |  | High Level Drainage Pipes Installation | 21d | 2015-04-02 | 2015-04-26 | BL2-MEP-PL-1F-1020, BL2-MEP-PL-1F-1010, BL2-MEP-PL-GF-2010, BL2-FN-1F-1010 | 53d | 0d | Cash Flow [6562.53 h]; Plumber [244.38 h]; Excavation [21] | 6,562.53 | MEP | PL & D | 2nd Fix | 2f |
| BL2-MEP-PL-1F-2020 |  | Water Supply Pipes Pressure Test | 6d | 2015-04-27 | 2015-05-03 | BL2-MEP-PL-1F-2000, BL2-MEP-PL-1F-1000, BL2-MEP-PL-GF-2020 | 95d | 15d | Cash Flow [145.74 h]; Plumber [48 h]; Excavation [6] | 145.74 | MEP | PL & D | 2nd Fix | 2f |
| BL2-MEP-PL-1F-2030 |  | Floor Drain Installation | 6d | 2015-05-25 | 2015-05-31 | BL2-MEP-PL-GF-2030, OFF-ENG-MEP-DR1140, OFF-PRO-MEP-DR1080, BL2-FN-1F-1060 | 65d | 0d | Cash Flow [548.14 h]; Plumber [6 h]; Excavation [6] | 548.14 | MEP | PL & D | 1st Fix | 2f |
| BL2-MEP-PL-1F-2040 |  | Drainage Pipes Gravity Test | 6d | 2015-06-01 | 2015-06-06 | BL2-MEP-PL-1F-2010, BL2-MEP-PL-1F-1010, BL2-MEP-PL-1F-2030, BL2-MEP-PL-GF-2040 | 65d | 0d | Cash Flow [820.24 h]; Plumber [48 h]; Excavation [6] | 820.24 | MEP | PL & D | 2nd Fix | 2f |
|  | 4 | **Final Fix** |  | 2015-07-13 | 2015-08-01 |  |  |  |  |  |  |  |  |  |
| BL2-MEP-PL-1F-3000 |  | Sanitary Ware Installation Including Connection | 14d | 2015-07-13 | 2015-07-26 | BL2-MEP-PL-1F-2020, BL2-MEP-PL-1F-2040, BL2-MEP-PL-GF-3000, BL2-FN-1F-1060, BL2-FN-1F-1050, BL2-FN-1F-1070, BL2-FN-1F-1090 | 72d | 0d | Cash Flow [4439.52 h]; Plumber [383.86 h]; Excavation [14] | 4,439.52 | MEP | PL & D | Final F | ff |
| BL2-MEP-PL-1F-3010 |  | Sanitary Ware Accessories Installation | 6d | 2015-07-27 | 2015-08-01 | BL2-MEP-PL-1F-3000, BL2-MEP-PL-GF-3010 | 128d | 9d | Cash Flow [160.22 h]; Plumber [36.45 h]; Excavation [6] | 160.22 | MEP | PL & D | Final F | ff |

| ID | WBS | Activity | Duration | Start | Finish | Predecessors | Total float | Free float | Resources | Cost | Responsibility | MEP Systems | MEP Steps | Fix |
| --- | --- | --- | --- | --- | --- | --- | --- | --- | --- | --- | --- | --- | --- | --- |
|  | 3 | **Fire Fighting Works** |  | 2015-09-19 | 2015-09-24 |  |  |  |  |  |  |  |  |  |
|  | 4 | **Final Fix** |  | 2015-09-19 | 2015-09-24 |  |  |  |  |  |  |  |  |  |
| BL2-MEP-FF-1F-3010 |  | Hose reel Cabinet Installation and Connection | 6d | 2015-09-19 | 2015-09-24 | BL2-MEP-FF-GF-3010, OFF-ENG-MEP-FF1130, BL2-FN-1F-1050, BL2-FN-1F-1070 | 99d | 0d | Cash Flow [1330.85 h]; Plumber [192 h]; Excavation [6] | 1,330.85 | MEP | FF | Final F | ff |
| BL2-MEP-FF-1F-3000 |  | Fire Extinguisher Installation | 2d | 2015-09-20 | 2015-09-21 | BL2-MEP-FF-GF-3000, OFF-ENG-MEP-FF1130, BL2-FN-1F-1050, BL2-FN-1F-1100 SS+1d | 130d | 4d | Cash Flow [1074.99 h]; Plumber [8 h]; Excavation [2] | 1,074.99 | MEP | FF | Final F | ff |
|  | 3 | **Electrical System** |  | 2015-02-14 | 2015-07-06 |  |  |  |  |  |  |  |  |  |
|  | 1 | **1st Fix** |  | 2015-02-14 | 2015-03-10 |  |  |  |  |  |  |  |  |  |
| BL2-MEP-EL-1F-1000 |  | PVC Back Boxes and Conduits Fixing in Wall | 22d | 2015-02-14 | 2015-03-10 | ENGMEP9650, ENGMEP9510, ENGMEP9230, ENGMEP9070, ENGMEP8850, ENGMEP8650, PROCMEPELE1990, PROCMEPELE2080, BL2-FN-1F-1000, BL2-MEP-EL-GF-1000 | 44d | 0d | Cash Flow [3307.67 h]; Electrician [384 h]; Excavation [22] | 3,307.67 | MEP | EL | 1st Fix | 1f |
| BL2-MEP-EL-1F-1010 |  | DB's Inclosure Fixing | 6d | 2015-02-14 | 2015-02-19 | ENGMEP8650, ENGMEP8850, BL2-FN-1F-1000, BL2-MEP-EL-GF-1010 | 60d | 16d | Cash Flow [2130.4 h]; Electrician [96 h]; Excavation [6] | 2,130.4 | MEP | EL | 1st Fix | 1f |
|  | 2 | **2nd Fix** |  | 2015-04-02 | 2015-05-19 |  |  |  |  |  |  |  |  |  |
| BL2-MEP-EL-1F-2000 |  | Lighting Wiring | 12d | 2015-04-02 | 2015-04-15 | BL2-MEP-EL-1F-1000, PROCMEPELE5680, BL2-FN-1F-1010, BL2-MEP-EL-GF-2030 | 110d | 0d | Cash Flow [3566.08 h]; Electrician [241.71 h]; Excavation [12] | 3,566.08 | MEP | EL | 2nd Fix | 2f |
| BL2-MEP-EL-1F-2010 |  | Power Points Wiring | 12d | 2015-04-02 | 2015-04-15 | BL2-MEP-EL-1F-1000, PROCMEPELE5680, BL2-FN-1F-1010, BL2-MEP-EL-GF-2040 | 110d | 0d | Cash Flow [2894.21 h]; Electrician [192 h]; Excavation [12] | 2,894.21 | MEP | EL | 2nd Fix | 2f |
| BL2-MEP-EL-1F-2020 |  | Cable Tray and Trunking Installation | 14d | 2015-04-02 | 2015-04-18 | PROCMEPELE3340, BL2-FN-1F-1010, BL2-MEP-EL-GF-2000 | 108d | 0d | Cash Flow [9064.45 h]; Electrician [336 h]; Excavation [14] | 9,064.45 | MEP | EL | 2nd Fix | 2f |
| BL2-MEP-EL-1F-2030 |  | Fire Alarm System Wiring | 12d | 2015-04-02 | 2015-04-15 | BL2-MEP-EL-1F-1000, PROCMEPELE8650, BL2-FN-1F-1010, BL2-MEP-EL-GF-2010 | 110d | 0d | Cash Flow [7111.01 h]; Electrician [192 h]; Excavation [12] | 7,111.01 | MEP | EL | 2nd Fix | 2f |
| BL2-MEP-EL-1F-2040 |  | Low Current System Wiring | 14d | 2015-04-02 | 2015-04-18 | BL2-MEP-EL-1F-1000, BL2-FN-1F-1010 | 259d | 49d | Cash Flow [38217.8 h]; Electrician [244 h]; Excavation [14] | 38,217.78 | MEP | EL |  | 2f |
| BL2-MEP-EL-1F-2060 |  | Emergency Light Wiring | 8d | 2015-04-02 | 2015-04-11 | BL2-MEP-EL-1F-1000, PROCMEPELE9330, BL2-FN-1F-1010, BL2-MEP-EL-GF-2060 | 114d | 4d | Cash Flow [1202.03 h]; Electrician [128 h]; Excavation [8] | 1,202.03 | MEP | EL | 2nd Fix | 2f |
| BL2-MEP-EL-1F-2050 |  | SMDB's Installation | 6d | 2015-04-20 | 2015-04-26 | BL2-MEP-EL-1F-1000, BL2-FN-1F-1020, BL2-MEP-EL-GF-2020 | 229d | 6d | Cash Flow [4196.6 h]; Electrician [45 h]; Excavation [6] | 4,196.6 | MEP | EL | 2nd Fix | 2f |
| BL2-MEP-EL-1F-2070 |  | DB's Installation and Termination | 12d | 2015-04-20 | 2015-05-03 | BL2-MEP-EL-1F-1010, PROCMEPELE8920, BL2-MEP-EL-GF-2070, BL2-FN-1F-1020 | 95d | 0d | Cash Flow [4970.93 h]; Electrician [288 h]; Excavation [12] | 4,970.93 | MEP | EL | 2nd Fix | 2f |
| BL2-MEP-EL-1F-3060 |  | Power Cable Puling | 14d | 2015-05-04 | 2015-05-19 | BL2-MEP-EL-1F-2020, BL2-MEP-EL-1F-2000, BL2-MEP-EL-1F-2010, BL2-MEP-EL-1F-2070, BL2-MEP-EL-GF-3060 | 145d | 0d | Cash Flow [6361.76 h]; Electrician [168 h]; Excavation [14] | 6,361.76 | MEP | EL | 2nd Fix | 2f |
|  | 3 | **Final Fix** |  | 2015-06-13 | 2015-07-06 |  |  |  |  |  |  |  |  |  |
| BL2-MEP-EL-1F-3000 |  | Lights Fitting Fixing | 14d | 2015-06-13 | 2015-06-26 | BL2-MEP-EL-1F-2000, PROCMEPELE8560, BL2-FN-1F-1070, BL2-MEP-EL-GF-3000 | 123d | 0d | Cash Flow [7322.66 h]; Electrician [244 h]; Excavation [14] | 7,322.66 | MEP | EL | Final F | ff |
| BL2-MEP-EL-1F-3010 |  | Emergency Light Fixing | 8d | 2015-06-13 | 2015-06-20 | BL2-MEP-EL-1F-2060, BL2-FN-1F-1070, BL2-MEP-EL-GF-3010 | 184d | 4d | Cash Flow [5714.02 h]; Electrician [128 h]; Excavation [8] | 5,714.02 | MEP | EL | Final F | ff |
| BL2-MEP-EL-1F-3020 |  | Fire Alarm System Detector Installation | 12d | 2015-06-13 | 2015-06-24 | BL2-MEP-EL-1F-2030, BL2-FN-1F-1070, BL2-MEP-EL-GF-3020 | 141d | 0d | Cash Flow [4034.38 h]; Electrician [192 h]; Excavation [12] | 4,034.38 | MEP | EL | Final F | ff |
| BL2-MEP-EL-1F-3030 |  | Despature for Low Current System Installation | 14d | 2015-06-13 | 2015-06-26 | BL2-MEP-EL-1F-2040, BL2-FN-1F-1020, BL2-FN-1F-1070 | 210d | 0d | Cash Flow [72738.2 h]; Electrician [336 h]; Excavation [14] | 72,738.16 | MEP | EL |  | ff |
| BL2-MEP-EL-1F-3050 |  | Sockets and Switches Fixing | 8d | 2015-06-13 | 2015-06-20 | BL2-MEP-EL-1F-2010, PROCMEPELE8830, BL2-FN-1F-1070, BL2-MEP-EL-GF-3050 | 177d | 4d | Cash Flow [1166.96 h]; Electrician [128 h]; Excavation [8] | 1,166.96 | MEP | EL | Final F | ff |
| BL2-MEP-EL-1F-3070 |  | SMDB's Termination and Final Connection | 6d | 2015-06-13 | 2015-06-18 | BL2-MEP-EL-1F-2050, BL2-MEP-EL-GF-3070, BL2-MEP-EL-1F-3060, BL2-FN-1F-1070 | 187d | 6d | Cash Flow [2785.83 h]; Electrician [192 h]; Excavation [6] | 2,785.82 | MEP | EL | Final F | ff |
| BL2-MEP-EL-1F-3040 |  | Low Current System Outlet installation and Connection | 10d | 2015-06-27 | 2015-07-06 | BL2-MEP-EL-1F-2040, BL2-MEP-EL-1F-3030 | 210d | 80d | Cash Flow [3860.79 h]; Electrician [80 h]; Excavation [10] | 3,860.79 | MEP | EL |  | ff |

| ID | WBS | Activity | Duration | Start | Finish | Predecessors | Total float | Free float | Resources | Cost | Structural | Responsibility | MEP Systems | MEP Steps | Finishing | Fix |
| --- | --- | --- | --- | --- | --- | --- | --- | --- | --- | --- | --- | --- | --- | --- | --- | --- |
|  | 5 | **2nd Floor** |  | 2014-11-10 | 2015-10-04 |  |  |  |  |  |  |  |  |  |  |  |
|  | 1 | **Structural** |  | 2014-11-10 | 2014-12-18 |  |  |  |  |  |  |  |  |  |  |  |
| BL2-ST-2F-1000 |  | Reinforcement for Verticals | 8d | 2014-11-10 | 2014-11-18 | ENG-STR-BL2-APP180, ENG-STR-BL2-APP190, BL2-ST-1F-1070 | 24d | 0d | MNHRS [716.08 h]; Cash Flow [47875.7 h]; Reinforcement [37996.6]; Excavation [8] | 47,875.66 | STR |  |  |  |  |  |
| BL2-ST-2F-1010 |  | MEP Works in Vertical Element | 5d | 2014-11-13 | 2014-11-18 | ENGMEP8650, BL2-ST-2F-1000 FF | 32d | 8d | Cash Flow [1798.55 h]; Electrician [160 h]; Excavation [5] | 1,798.55 |  | MEP | EL | B.W |  |  |
| BL2-ST-2F-1020 |  | FW for Verticals | 8d | 2014-11-19 | 2014-11-27 | BL2-ST-2F-1000 | 24d | 0d | MNHRS [8705.02 h]; Cash Flow [38271.1 h]; FW [1229]; Excavation [8] | 38,271.06 | STR |  |  |  |  |  |
| BL2-ST-2F-1030 |  | Concrete Verticals | 1d | 2014-11-29 | 2014-11-29 | BL2-ST-2F-1020, BL2-ST-2F-1010 | 24d | 0d | MNHRS [1902.9 h]; Cash Flow [31733.1 h]; Concrete [230]; Excavation [1] | 31,733.1 | STR |  |  |  |  |  |
| BL2-ST-2F-1040 |  | FW for Slab | 8d | 2014-11-30 | 2014-12-08 | BL2-ST-2F-1030 | 24d | 0d | MNHRS [11750.7 h]; Cash Flow [51661.3 h]; FW [1659]; Excavation [8] | 51,661.26 | STR |  |  |  |  |  |
| BL2-ST-2F-1050 |  | Reinforcement for Slab | 8d | 2014-12-09 | 2014-12-17 | BL2-ST-2F-1040 | 24d | 0d | MNHRS [1542.3 h]; Cash Flow [103116 h]; Reinforcement [81838]; Excavation [8] | 103,115.9 | STR |  |  |  |  |  |
| BL2-ST-2F-1060 |  | MEP Works in Slab & Beams | 5d | 2014-12-13 | 2014-12-17 | ENGMEP8650, BL2-ST-2F-1050 FF | 24d | 0d | Cash Flow [3349.02 h]; Electrician [320 h]; Excavation [5] | 3,349.02 |  | MEP | EL | B.W |  |  |
| BL2-ST-2F-1070 |  | Concrete for Slab | 1d | 2014-12-18 | 2014-12-18 | BL2-ST-2F-1050, BL2-ST-2F-1060 | 24d | 0d | MNHRS [3434.99 h]; Cash Flow [57282.4 h]; Concrete [415]; Excavation [1] | 57,282.45 | STR |  |  |  |  |  |
|  | 2 | **Fiishing** |  | 2015-02-15 | 2015-10-04 |  |  |  |  |  |  |  |  |  |  |  |
| BL2-FN-2F-1000 |  | Block Works | 21d | 2015-02-15 | 2015-03-10 | BL2-ST-3F-1070 FS+12d, BL2-ST-4F-1070 | 53d | 0d | Cash Flow [26499 h]; MNHRS [1993 h]; BW [520]; Excavation [21] | 26,498.96 |  |  |  |  | FIN |  |
| BL2-FN-2F-1010 |  | Plaster | 19d | 2015-03-25 | 2015-04-15 | BL2-FN-2F-1000, BL2-MEP-EL-2F-1010, BL2-MEP-EL-2F-1000, BL2-MEP-PL-2F-1000, BL2-MEP-PL-2F-1010 | 53d | 0d | MNHRS [3122 h]; Cash Flow [36698.9 h]; Plaster [1041]; Excavation [19] | 36,698.89 |  |  |  |  | FIN |  |
| BL2-FN-2F-1020 |  | Paint 1st Coat | 15d | 2015-04-16 | 2015-05-03 | BL2-FN-2F-1010 | 68d | 0d | MNHRS [312.2 h]; Cash Flow [5651.89 h]; Painting [1040.8]; Excavation [15] | 5,651.89 |  |  |  |  | FIN |  |
| BL2-FN-2F-1030 |  | Ceiling Paint | 10d | 2015-04-28 | 2015-05-09 | BL2-FN-2F-1020 SS+10d | 68d | 0d | MNHRS [29.34 h]; Cash Flow [177.03 h]; Painting [32.6]; Excavation [10] | 177.03 |  |  |  |  | FIN |  |
| BL2-FN-2F-1040 |  | Waterproofing | 5d | 2015-05-10 | 2015-05-14 | BL2-FN-2F-1030 | 68d | 0d | MNHRS [7 h]; Cash Flow [131.28 h]; Waterproofing [22.32]; Excavation [5] | 131.28 |  |  |  |  | FIN |  |
| BL2-FN-2F-1050 |  | Wall Tiling | 10d | 2015-05-10 | 2015-05-20 | BL2-FN-2F-1030 | 86d | 18d | MNHRS [3328 h]; Cash Flow [14765 h]; Tiling [334]; Excavation [10] | 14,765 |  |  |  |  | FIN |  |
| BL2-FN-2F-1060 |  | Flooring Works | 20d | 2015-05-16 | 2015-06-06 | BL2-FN-2F-1040 | 68d | 0d | MNHRS [1318 h]; Cash Flow [30728.5 h]; Tiling [200.7]; Excavation [20] | 30,728.51 |  |  |  |  | FIN |  |
| BL2-FN-2F-1070 |  | False Ceiling | 15d | 2015-06-10 | 2015-06-24 | BL2-FN-2F-1050, BL2-MEP-AC-2F-2070 FF+6d, BL2-MEP-PL-2F-2020 FF+6d, BL2-MEP-PL-2F-2040 FF+6d, BL2-MEP-AC-2F-2030 FF+6d, BL2-MEP-EL-2F-2060 FF+6d, BL2-MEP-EL-2F-2000 FF+6d, BL2-MEP-EL-2F-2010 FF+6d, BL2-MEP-EL-2F-2020 FF+6d, BL2-MEP-EL-2F-2030 FF+6d, BL2-MEP-EL-2F-2070 FF+6d | 68d | 0d | Cash Flow [44765.4 h]; False Ceiling [1067]; MNHRS [5335 h]; Excavation [15] | 44,765.42 |  |  |  |  | FIN |  |
| BL2-FN-2F-1080 |  | Hand Rails for Stairs | 15d | 2015-06-25 | 2015-07-09 | BL2-FN-2F-1070 | 68d | 3d | Cash Flow [9483.79 h]; Metal Works & Handrail [20]; MNHRS [43 h]; Excavation [15] | 9,483.79 |  |  |  |  | FIN |  |
| BL2-FN-2F-1090 |  | Doors Installation | 15d | 2015-07-13 | 2015-07-27 | BL2-FN-2F-1080, BL2-FN-1F-1090 | 65d | 0d | Cash Flow [25990.1 h]; Excavation [15] | 25,990.11 |  |  |  |  | FIN |  |
| BL2-FN-2F-1100 |  | Final Paint | 10d | 2015-09-25 | 2015-10-04 | BL2-FN-2F-1060, BL2-MEP-EL-2F-3000 FF+4d, BL2-MEP-EL-2F-3010 FF+4d, BL2-MEP-EL-2F-3040 FF+4d, BL2-MEP-EL-2F-3020 FF+4d, BL2-MEP-EL-2F-3060 FF+4d, BL2-MEP-PL-2F-3000 FF+4d, BL2-MEP-PL-2F-3010 FF+4d, BL2-MEP-FF-2F-3010 FF+4d, BL2-MEP-EL-2F-3070 FF+4d, BL2-MEP-EL-2F-3030 FF+4d | 126d | 0d | Excavation [10] |  |  |  |  |  | FIN |  |
|  | 6 | **MEP Work** |  | 2015-03-11 | 2015-09-30 |  |  |  |  |  |  |  |  |  |  |  |
|  | 1 | **Mechanical System** |  | 2015-03-11 | 2015-09-30 |  |  |  |  |  |  |  |  |  |  |  |
|  | 2 | **HVAC Works** |  | 2015-03-11 | 2015-07-06 |  |  |  |  |  |  |  |  |  |  |  |
|  | 1 | **1st Fix** |  | 2015-03-11 | 2015-03-24 |  |  |  |  |  |  |  |  |  |  |  |
| BL2-MEP-AC-2F-1000 |  | Supports and Hungers Fixing | 12d | 2015-03-11 | 2015-03-24 | BL2-MEP-AC-1F-1000, BL2-FN-2F-1000 | 72d | 10d | Cash Flow [326.47 h]; Ductman [192 h]; Excavation [12] | 326.47 |  | MEP | AC | 1st Fix |  | 1f |

| ID | WBS | Activity | Duration | Start | Finish | Predecessors | Total float | Free float | Resources | Cost | Responsibility | MEP Systems | MEP Steps | Fix |
| --- | --- | --- | --- | --- | --- | --- | --- | --- | --- | --- | --- | --- | --- | --- |
|  | 3 | **2nd Fix** |  | 2015-04-16 | 2015-06-09 |  |  |  |  |  |  |  |  |  |
| BL2-MEP-AC-2F-2020 |  | FCU's Installation | 8d | 2015-04-16 | 2015-04-25 | BL2-MEP-AC-2F-1000, BL2-MEP-AC-1F-2020, BL2-FN-2F-1010 | 108d | 14d | Cash Flow [5992.06 h]; Pipe Fitter - CHW [96 h]; Excavation [8] | 5,992.06 | MEP | AC | 2nd Fix | 2f |
| BL2-MEP-AC-2F-2000 |  | Duct Installation and Insulation | 21d | 2015-04-27 | 2015-05-20 | BL2-MEP-AC-2F-1000, BL2-MEP-AC-1F-2000, BL2-FN-2F-1010 | 45d | 0d | Cash Flow [4329.94 h]; Ductman [263 h]; Excavation [21] | 4,329.94 | MEP | AC | 2nd Fix | 2f |
| BL2-MEP-AC-2F-2010 |  | Chilled Water Pipes and Fittings Installation | 21d | 2015-04-27 | 2015-05-20 | BL2-MEP-AC-2F-1000, BL2-MEP-AC-1F-2010, BL2-FN-2F-1010 | 44d | 0d | Cash Flow [5230.19 h]; Pipe Fitter - CHW [420 h]; Excavation [21] | 5,230.19 | MEP | AC | 2nd Fix | 2f |
| BL2-MEP-AC-2F-2030 |  | Duct Accessories Installation | 14d | 2015-05-21 | 2015-06-05 | BL2-MEP-AC-2F-2000, BL2-MEP-AC-1F-2030 | 81d | 7d | Cash Flow [652.97 h]; Pipe Fitter - CHW [448 h]; Excavation [14] | 652.97 | MEP | AC | 2nd Fix | 2f |
| BL2-MEP-AC-2F-2040 |  | Chilled Water Pipes Pressure Test | 6d | 2015-05-21 | 2015-05-27 | BL2-MEP-AC-2F-2010 | 80d | 0d | Cash Flow [581.12 h]; Pipe Fitter - CHW [48 h]; Excavation [6] | 581.12 | MEP | AC | 2nd Fix | 2f |
| BL2-MEP-AC-2F-2050 |  | Chilled Water Pipes Insulation | 12d | 2015-05-28 | 2015-06-09 | BL2-MEP-AC-2F-2040, BL2-MEP-AC-1F-2050 | 158d | 9d | Cash Flow [1658.21 h]; Pipe Fitter - CHW [192 h]; Excavation [12] | 1,658.21 | MEP | AC | 2nd Fix | 2f |
| BL2-MEP-AC-2F-2060 |  | Valve Package Installation | 6d | 2015-05-28 | 2015-06-03 | BL2-MEP-AC-2F-2020, BL2-MEP-AC-2F-2040 | 80d | 0d | Cash Flow [2380.49 h]; Pipe Fitter - CHW [48 h]; Excavation [6] | 2,380.49 | MEP | AC | 2nd Fix | 2f |
| BL2-MEP-AC-2F-2070 |  | FCU's Drain Pipes Installation | 3d | 2015-06-04 | 2015-06-06 | BL2-MEP-AC-2F-2020, BL2-MEP-AC-2F-2060, BL2-MEP-AC-1F-2070 | 80d | 12d | Cash Flow [516.93 h]; Pipe Fitter - CHW [24 h]; Excavation [3] | 516.93 | MEP | AC | 2nd Fix | 2f |
|  | 4 | **Final Fix** |  | 2015-06-25 | 2015-07-06 |  |  |  |  |  |  |  |  |  |
| BL2-MEP-AC-2F-3000 |  | Grills and Diffusers Fixing | 12d | 2015-06-25 | 2015-07-06 | BL2-MEP-AC-2F-2030, BL2-MEP-AC-1F-3000, BL2-FN-2F-1070 | 149d | 10d | Cash Flow [11538.6 h]; Ductman [384 h]; Excavation [12] | 11,538.61 | MEP | AC | Final F | ff |
|  | 1 | **Plumbing and Drainage Works** |  | 2015-03-11 | 2015-08-16 |  |  |  |  |  |  |  |  |  |
|  | 1 | **1st Fix** |  | 2015-03-11 | 2015-03-24 |  |  |  |  |  |  |  |  |  |
| BL2-MEP-PL-2F-1000 |  | Low Level Water Supply Pipes Installation | 12d | 2015-03-11 | 2015-03-24 | BL2-MEP-PL-1F-1000, BL2-FN-2F-1000 | 53d | 0d | Cash Flow [713.22 h]; Plumber [42 h]; Excavation [12] | 713.22 | MEP | PL & D | 1st Fix | 1f |
| BL2-MEP-PL-2F-1010 |  | Low Level Drainage Pipes Installation | 12d | 2015-03-11 | 2015-03-24 | BL2-MEP-PL-1F-1010, BL2-FN-2F-1000 | 53d | 0d | Cash Flow [2279.46 h]; Plumber [12.67 h]; Excavation [12] | 2,279.46 | MEP | PL & D | 1st Fix | 1f |
| BL2-MEP-PL-2F-1020 |  | Supports installation for High level Pipes | 12d | 2015-03-11 | 2015-03-24 | BL2-MEP-PL-1F-1020, BL2-FN-2F-1000 | 71d | 10d | Cash Flow [819.68 h]; Plumber [16.35 h]; Excavation [12] | 819.68 | MEP | PL & D | 1st Fix | 1f |
|  | 3 | **2nd Fix** |  | 2015-04-27 | 2015-06-18 |  |  |  |  |  |  |  |  |  |
| BL2-MEP-PL-2F-2000 |  | High Level Water Supply Pipes and Fittings Installation | 21d | 2015-04-27 | 2015-05-20 | BL2-MEP-PL-2F-1020, BL2-MEP-PL-2F-1000, BL2-MEP-PL-1F-2000, BL2-FN-2F-1010 | 53d | 0d | Cash Flow [1308.6 h]; Plumber [150.02 h]; Excavation [21] | 1,308.6 | MEP | PL & D | 2nd Fix | 2f |
| BL2-MEP-PL-2F-2010 |  | High Level Drainage Pipes Installation | 21d | 2015-04-27 | 2015-05-20 | BL2-MEP-PL-2F-1020, BL2-MEP-PL-2F-1010, BL2-MEP-PL-1F-2010, BL2-FN-2F-1010 | 53d | 0d | Cash Flow [6562.53 h]; Plumber [244.38 h]; Excavation [21] | 6,562.53 | MEP | PL & D | 2nd Fix | 2f |
| BL2-MEP-PL-2F-2020 |  | Water Supply Pipes Pressure Test | 6d | 2015-05-21 | 2015-05-27 | BL2-MEP-PL-2F-2000, BL2-MEP-PL-2F-1000, BL2-MEP-PL-1F-2020 | 89d | 15d | Cash Flow [145.74 h]; Plumber [48 h]; Excavation [6] | 145.74 | MEP | PL & D | 2nd Fix | 2f |
| BL2-MEP-PL-2F-2030 |  | Floor Drain Installation | 6d | 2015-06-07 | 2015-06-12 | BL2-MEP-PL-1F-2030, BL2-FN-2F-1060 | 68d | 0d | Cash Flow [548.14 h]; Plumber [6 h]; Excavation [6] | 548.14 | MEP | PL & D | 1st Fix | 2f |
| BL2-MEP-PL-2F-2040 |  | Drainage Pipes Gravity Test | 6d | 2015-06-13 | 2015-06-18 | BL2-MEP-PL-2F-2010, BL2-MEP-PL-2F-1010, BL2-MEP-PL-2F-2030, BL2-MEP-PL-1F-2040 | 68d | 0d | Cash Flow [820.24 h]; Plumber [48 h]; Excavation [6] | 820.24 | MEP | PL & D | 2nd Fix | 2f |
|  | 4 | **Final Fix** |  | 2015-07-28 | 2015-08-16 |  |  |  |  |  |  |  |  |  |
| BL2-MEP-PL-2F-3000 |  | Sanitary Ware Installation Including Connection | 14d | 2015-07-28 | 2015-08-10 | BL2-MEP-PL-2F-2020, BL2-MEP-PL-2F-2040, BL2-MEP-PL-1F-3000, BL2-FN-2F-1060, BL2-FN-2F-1050, BL2-FN-2F-1070, BL2-FN-2F-1090 | 71d | 0d | Cash Flow [4439.52 h]; Plumber [383.86 h]; Excavation [14] | 4,439.52 | MEP | PL & D | Final F | ff |
| BL2-MEP-PL-2F-3010 |  | Sanitary Ware Accessories Installation | 6d | 2015-08-11 | 2015-08-16 | BL2-MEP-PL-2F-3000, BL2-MEP-PL-1F-3010 | 119d | 13d | Cash Flow [160.22 h]; Plumber [36.45 h]; Excavation [6] | 160.22 | MEP | PL & D | Final F | ff |

| ID | WBS | Activity | Duration | Start | Finish | Predecessors | Total float | Free float | Resources | Cost | Responsibility | MEP Systems | MEP Steps | Fix |
| --- | --- | --- | --- | --- | --- | --- | --- | --- | --- | --- | --- | --- | --- | --- |
|  | 3 | **Fire Fighting Works** |  | 2015-09-25 | 2015-09-30 |  |  |  |  |  |  |  |  |  |
|  | 4 | **Final Fix** |  | 2015-09-25 | 2015-09-30 |  |  |  |  |  |  |  |  |  |
| BL2-MEP-FF-2F-3010 |  | Hose reel Cabinet Installation and Connection | 6d | 2015-09-25 | 2015-09-30 | BL2-MEP-FF-1F-3010, BL2-FN-2F-1050, BL2-FN-2F-1070 | 99d | 0d | Cash Flow [1330.85 h]; Plumber [192 h]; Excavation [6] | 1,330.85 | MEP | FF | Final F | ff |
| BL2-MEP-FF-2F-3000 |  | Fire Extinguisher Installation | 2d | 2015-09-26 | 2015-09-27 | BL2-MEP-FF-1F-3000, BL2-FN-2F-1050, BL2-FN-2F-1100 SS+1d | 126d | 4d | Cash Flow [1074.99 h]; Plumber [8 h]; Excavation [2] | 1,074.99 | MEP | FF | Final F | ff |
|  | 3 | **Electrical System** |  | 2015-03-11 | 2015-07-18 |  |  |  |  |  |  |  |  |  |
|  | 1 | **1st Fix** |  | 2015-03-11 | 2015-03-24 |  |  |  |  |  |  |  |  |  |
| BL2-MEP-EL-2F-1000 |  | PVC Back Boxes and Conduits Fixing in Wall | 12d | 2015-03-11 | 2015-03-24 | BL2-MEP-EL-1F-1000, BL2-FN-2F-1000 | 53d | 0d | Cash Flow [3307.67 h]; Electrician [384 h]; Excavation [12] | 3,307.67 | MEP | EL | 1st Fix | 1f |
| BL2-MEP-EL-2F-1010 |  | DB's Inclosure Fixing | 6d | 2015-03-11 | 2015-03-17 | BL2-MEP-EL-1F-1010, BL2-FN-2F-1000 | 59d | 6d | Cash Flow [2130.4 h]; Electrician [96 h]; Excavation [6] | 2,130.4 | MEP | EL | 1st Fix | 1f |
|  | 2 | **2nd Fix** |  | 2015-04-16 | 2015-06-04 |  |  |  |  |  |  |  |  |  |
| BL2-MEP-EL-2F-2000 |  | Lighting Wiring | 12d | 2015-04-16 | 2015-04-29 | BL2-MEP-EL-2F-1000, BL2-MEP-EL-1F-2000, BL2-FN-2F-1010 | 113d | 10d | Cash Flow [3566.08 h]; Electrician [241.71 h]; Excavation [12] | 3,566.08 | MEP | EL | 2nd Fix | 2f |
| BL2-MEP-EL-2F-2010 |  | Power Points Wiring | 12d | 2015-04-16 | 2015-04-29 | BL2-MEP-EL-2F-1000, BL2-MEP-EL-1F-2010, BL2-FN-2F-1010 | 113d | 10d | Cash Flow [2894.21 h]; Electrician [192 h]; Excavation [12] | 2,894.21 | MEP | EL | 2nd Fix | 2f |
| BL2-MEP-EL-2F-2030 |  | Fire Alarm System Wiring | 12d | 2015-04-16 | 2015-04-29 | BL2-MEP-EL-2F-1000, BL2-MEP-EL-1F-2030, BL2-FN-2F-1010 | 113d | 10d | Cash Flow [7111.01 h]; Electrician [192 h]; Excavation [12] | 7,111.01 | MEP | EL | 2nd Fix | 2f |
| BL2-MEP-EL-2F-2040 |  | Low Current System Wiring | 14d | 2015-04-16 | 2015-05-02 | BL2-MEP-EL-2F-1000, BL2-FN-2F-1010 | 249d | 49d | Cash Flow [38217.8 h]; Electrician [244 h]; Excavation [14] | 38,217.78 | MEP | EL |  | 2f |
| BL2-MEP-EL-2F-2060 |  | Emergency Light Wiring | 8d | 2015-04-16 | 2015-04-25 | BL2-MEP-EL-2F-1000, BL2-MEP-EL-1F-2060, BL2-FN-2F-1010 | 117d | 14d | Cash Flow [1202.03 h]; Electrician [128 h]; Excavation [8] | 1,202.03 | MEP | EL | 2nd Fix | 2f |
| BL2-MEP-EL-2F-2020 |  | Cable Tray and Trunking Installation | 14d | 2015-04-19 | 2015-05-04 | BL2-MEP-EL-1F-2020, BL2-FN-2F-1010 | 109d | 6d | Cash Flow [9064.45 h]; Electrician [336 h]; Excavation [14] | 9,064.45 | MEP | EL | 2nd Fix | 2f |
| BL2-MEP-EL-2F-2050 |  | SMDB's Installation | 6d | 2015-05-04 | 2015-05-10 | BL2-MEP-EL-2F-1000, BL2-FN-2F-1020, BL2-MEP-EL-1F-2050 | 223d | 16d | Cash Flow [4196.6 h]; Electrician [45 h]; Excavation [6] | 4,196.6 | MEP | EL | 2nd Fix | 2f |
| BL2-MEP-EL-2F-2070 |  | DB's Installation and Termination | 12d | 2015-05-04 | 2015-05-17 | BL2-MEP-EL-2F-1010, BL2-MEP-EL-1F-2070, BL2-FN-2F-1020 | 98d | 2d | Cash Flow [4970.93 h]; Electrician [288 h]; Excavation [12] | 4,970.93 | MEP | EL | 2nd Fix | 2f |
| BL2-MEP-EL-2F-3050 |  | Power Cable Puling | 14d | 2015-05-20 | 2015-06-04 | BL2-MEP-EL-2F-2020, BL2-MEP-EL-2F-2000, BL2-MEP-EL-2F-2010, BL2-MEP-EL-1F-3060, BL2-MEP-EL-2F-2070 | 145d | 6d | Cash Flow [6361.76 h]; Electrician [168 h]; Excavation [14] | 6,361.76 | MEP | EL | 2nd Fix | 2f |
|  | 3 | **Final Fix** |  | 2015-06-25 | 2015-07-18 |  |  |  |  |  |  |  |  |  |
| BL2-MEP-EL-2F-3010 |  | Emergency Light Fixing | 8d | 2015-06-25 | 2015-07-02 | BL2-MEP-EL-2F-2060, BL2-FN-2F-1070, BL2-MEP-EL-1F-3010 | 180d | 14d | Cash Flow [5714.02 h]; Electrician [128 h]; Excavation [8] | 5,714.02 | MEP | EL | Final F | ff |
| BL2-MEP-EL-2F-3020 |  | Fire Alarm System Detector Installation | 12d | 2015-06-25 | 2015-07-06 | BL2-MEP-EL-2F-2030, BL2-FN-2F-1070, BL2-MEP-EL-1F-3020 | 141d | 10d | Cash Flow [4034.38 h]; Electrician [192 h]; Excavation [12] | 4,034.38 | MEP | EL | Final F | ff |
| BL2-MEP-EL-2F-3030 |  | Despature for Low Current System Installation | 14d | 2015-06-25 | 2015-07-08 | BL2-MEP-EL-2F-2040, BL2-FN-2F-1020, BL2-FN-2F-1070 | 200d | 0d | Cash Flow [72738.2 h]; Electrician [336 h]; Excavation [14] | 72,738.16 | MEP | EL |  | ff |
| BL2-MEP-EL-2F-3060 |  | Sockets and Switches Fixing | 8d | 2015-06-25 | 2015-07-02 | BL2-MEP-EL-2F-2010, BL2-FN-2F-1070, BL2-MEP-EL-1F-3050 | 173d | 14d | Cash Flow [1166.96 h]; Electrician [128 h]; Excavation [8] | 1,166.96 | MEP | EL | Final F | ff |
| BL2-MEP-EL-2F-3070 |  | SMDB's Termination and Final Connection | 6d | 2015-06-25 | 2015-06-30 | BL2-MEP-EL-2F-2050, BL2-MEP-EL-1F-3070, BL2-MEP-EL-2F-3050, BL2-FN-2F-1070 | 181d | 16d | Cash Flow [2785.83 h]; Electrician [192 h]; Excavation [6] | 2,785.82 | MEP | EL | Final F | ff |
| BL2-MEP-EL-2F-3000 |  | Lights Fitting Fixing | 14d | 2015-06-27 | 2015-07-10 | BL2-MEP-EL-2F-2000, BL2-FN-2F-1070, BL2-MEP-EL-1F-3000 | 123d | 6d | Cash Flow [7322.66 h]; Electrician [244 h]; Excavation [14] | 7,322.66 | MEP | EL | Final F | ff |
| BL2-MEP-EL-2F-3040 |  | Low Current System Outlet installation and Connection | 10d | 2015-07-09 | 2015-07-18 | BL2-MEP-EL-2F-2040, BL2-MEP-EL-2F-3030 | 200d | 74d | Cash Flow [3860.79 h]; Electrician [80 h]; Excavation [10] | 3,860.79 | MEP | EL |  | ff |

| ID | WBS | Activity | Duration | Start | Finish | Predecessors | Total float | Free float | Resources | Cost | Structural | Responsibility | MEP Systems | MEP Steps | Finishing | Fix |
| --- | --- | --- | --- | --- | --- | --- | --- | --- | --- | --- | --- | --- | --- | --- | --- | --- |
|  | 6 | **3rd Floor** |  | 2014-12-20 | 2015-10-10 |  |  |  |  |  |  |  |  |  |  |  |
|  | 1 | **Structural** |  | 2014-12-20 | 2015-01-19 |  |  |  |  |  |  |  |  |  |  |  |
| BL2-ST-3F-1000 |  | Reinforcement for Verticals | 8d | 2014-12-20 | 2014-12-28 | ENG-STR-BL2-APP200, ENG-STR-BL2-APP210, BL2-ST-2F-1070 | 24d | 0d | MNHRS [842.2 h]; Cash Flow [56308.2 h]; Reinforcement [37996.5]; Excavation [8] | 56,308.21 | STR |  |  |  |  |  |
| BL2-ST-3F-1010 |  | MEP Works in Vertical Element | 5d | 2014-12-23 | 2014-12-28 | ENGMEP8650, BL2-ST-3F-1000 FF | 29d | 5d | Cash Flow [1798.55 h]; Electrician [160 h]; Excavation [5] | 1,798.55 |  | MEP | EL | B.W |  |  |
| BL2-ST-3F-1020 |  | FW for Verticals | 5d | 2014-12-29 | 2015-01-05 | BL2-ST-3F-1000 | 24d | 0d | MNHRS [9250.41 h]; Cash Flow [40668.8 h]; FW [1154.6]; Excavation [5] | 40,668.84 | STR |  |  |  |  |  |
| BL2-ST-3F-1030 |  | Concrete Verticals | 1d | 2015-01-06 | 2015-01-06 | BL2-ST-3F-1020, BL2-ST-3F-1010 | 24d | 0d | MNHRS [2003.27 h]; Cash Flow [33907.1 h]; Concrete [174]; Excavation [1] | 33,907.07 | STR |  |  |  |  |  |
| BL2-ST-3F-1040 |  | FW for Slab | 5d | 2015-01-07 | 2015-01-12 | BL2-ST-3F-1030 | 24d | 0d | MNHRS [16202.4 h]; Cash Flow [71232.8 h]; FW [1983]; Excavation [5] | 71,232.75 | STR |  |  |  |  |  |
| BL2-ST-3F-1050 |  | Reinforcement for Slab | 5d | 2015-01-13 | 2015-01-18 | BL2-ST-3F-1040 | 24d | 0d | MNHRS [1629.17 h]; Cash Flow [108924 h]; Reinforcement [81838]; Excavation [5] | 108,923.67 | STR |  |  |  |  |  |
| BL2-ST-3F-1060 |  | MEP Works in Slab & Beams | 5d | 2015-01-13 | 2015-01-18 | ENGMEP8650, BL2-ST-3F-1050 FF | 24d | 0d | Cash Flow [3349.02 h]; Electrician [320 h]; Excavation [5] | 3,349.02 |  | MEP | EL | B.W |  |  |
| BL2-ST-3F-1070 |  | Concrete for Slab | 1d | 2015-01-19 | 2015-01-19 | BL2-ST-3F-1050, BL2-ST-3F-1060 | 24d | 0d | MNHRS [4319.68 h]; Cash Flow [73114.5 h]; Concrete [442]; Excavation [1] | 73,114.49 | STR |  |  |  |  |  |
|  | 2 | **Fiishing** |  | 2015-03-12 | 2015-10-10 |  |  |  |  |  |  |  |  |  |  |  |
| BL2-FN-3F-1000 |  | Block Works | 21d | 2015-03-12 | 2015-04-05 | BL2-ST-4F-1070 FS+12d, BL2-ST-5F-1070 | 52d | 0d | Cash Flow [26499 h]; MNHRS [1993 h]; BW [520]; Excavation [21] | 26,498.96 |  |  |  |  | FIN |  |
| BL2-FN-3F-1010 |  | Plaster | 19d | 2015-04-20 | 2015-05-11 | BL2-FN-3F-1000, BL2-MEP-PL-3F-1000, BL2-MEP-PL-3F-1010, BL2-MEP-EL-3F-1000, BL2-MEP-EL-3F-1010 | 52d | 0d | MNHRS [3122 h]; Cash Flow [36698.9 h]; Plaster [1041]; Excavation [19] | 36,698.89 |  |  |  |  | FIN |  |
| BL2-FN-3F-1020 |  | Paint 1st Coat | 15d | 2015-05-12 | 2015-05-28 | BL2-FN-3F-1010 | 61d | 0d | MNHRS [312.2 h]; Cash Flow [5651.89 h]; Painting [1040.8]; Excavation [15] | 5,651.89 |  |  |  |  | FIN |  |
| BL2-FN-3F-1030 |  | Ceiling Paint | 10d | 2015-05-24 | 2015-06-03 | BL2-FN-3F-1020 SS+10d | 61d | 0d | MNHRS [29.34 h]; Cash Flow [177.03 h]; Painting [32.6]; Excavation [10] | 177.03 |  |  |  |  | FIN |  |
| BL2-FN-3F-1040 |  | Waterproofing | 5d | 2015-06-04 | 2015-06-08 | BL2-FN-3F-1030 | 61d | 0d | MNHRS [7 h]; Cash Flow [131.28 h]; Waterproofing [22.32]; Excavation [5] | 131.28 |  |  |  |  | FIN |  |
| BL2-FN-3F-1050 |  | Wall Tiling | 10d | 2015-06-04 | 2015-06-13 | BL2-FN-3F-1030 | 79d | 18d | MNHRS [1663.8 h]; Cash Flow [7382.46 h]; Tiling [167]; Excavation [10] | 7,382.46 |  |  |  |  | FIN |  |
| BL2-FN-3F-1060 |  | Flooring Works | 20d | 2015-06-09 | 2015-06-28 | BL2-FN-3F-1040 | 61d | 0d | MNHRS [1318 h]; Cash Flow [30728.5 h]; Tiling [200.7]; Excavation [20] | 30,728.51 |  |  |  |  | FIN |  |
| BL2-FN-3F-1070 |  | False Ceiling | 15d | 2015-07-02 | 2015-07-16 | BL2-FN-3F-1050, BL2-MEP-AC-3F-2070 FF+6d, BL2-MEP-PL-3F-2020 FF+6d, BL2-MEP-PL-3F-2040 FF+6d, BL2-MEP-AC-3F-2030 FF+6d, BL2-MEP-EL-3F-2030 FF+6d, BL2-MEP-EL-3F-2000 FF+6d, BL2-MEP-EL-3F-2010 FF+6d, BL2-MEP-EL-3F-2020 FF+6d, BL2-MEP-EL-3F-2040 FF+6d, BL2-MEP-EL-3F-2070 FF+6d | 61d | 0d | Cash Flow [44765.4 h]; False Ceiling [1067]; MNHRS [5335 h]; Excavation [15] | 44,765.42 |  |  |  |  | FIN |  |
| BL2-FN-3F-1080 |  | Hand Rails for Stairs | 15d | 2015-07-17 | 2015-07-31 | BL2-FN-3F-1070 | 61d | 0d | Cash Flow [9483.79 h]; Metal Works & Handrail [20]; MNHRS [43 h]; Excavation [15] | 9,483.79 |  |  |  |  | FIN |  |
| BL2-FN-3F-1090 |  | Doors Installation | 15d | 2015-08-01 | 2015-08-15 | BL2-FN-3F-1080, BL2-FN-2F-1090 | 61d | 0d | Cash Flow [25990.1 h]; Excavation [15] | 25,990.11 |  |  |  |  | FIN |  |
| BL2-FN-3F-1100 |  | Final Paint | 10d | 2015-10-01 | 2015-10-10 | BL2-FN-3F-1060, BL2-MEP-EL-3F-3050 FF+4d, BL2-MEP-EL-3F-3020 FF+4d, BL2-MEP-EL-3F-3000 FF+4d, BL2-MEP-EL-3F-3010 FF+4d, BL2-MEP-EL-3F-3060 FF+4d, BL2-MEP-PL-3F-3000 FF+4d, BL2-MEP-PL-3F-3010 FF+4d, BL2-MEP-FF-3F-3010 FF+4d, BL2-MEP-EL-3F-3070 FF+4d, BL2-MEP-EL-3F-3030 FF+4d | 122d | 0d | Excavation [10] |  |  |  |  |  | FIN |  |
|  | 7 | **MEP Work** |  | 2015-03-26 | 2015-10-06 |  |  |  |  |  |  |  |  |  |  |  |
|  | 1 | **Mechanical System** |  | 2015-04-06 | 2015-10-06 |  |  |  |  |  |  |  |  |  |  |  |
|  | 2 | **HVAC Works** |  | 2015-04-06 | 2015-07-28 |  |  |  |  |  |  |  |  |  |  |  |
|  | 1 | **1st Fix** |  | 2015-04-06 | 2015-04-19 |  |  |  |  |  |  |  |  |  |  |  |
| BL2-MEP-AC-3F-1000 |  | Supports and Hungers Fixing | 12d | 2015-04-06 | 2015-04-19 | BL2-MEP-AC-2F-1000, BL2-FN-3F-1000 | 71d | 10d | Cash Flow [326.47 h]; Ductman [192 h]; Excavation [12] | 326.47 |  | MEP | AC | 1st Fix |  | 1f |

| ID | WBS | Activity | Duration | Start | Finish | Predecessors | Total float | Free float | Resources | Cost | Responsibility | MEP Systems | MEP Steps | Fix |
| --- | --- | --- | --- | --- | --- | --- | --- | --- | --- | --- | --- | --- | --- | --- |
|  | 3 | **2nd Fix** |  | 2015-05-12 | 2015-06-30 |  |  |  |  |  |  |  |  |  |
| BL2-MEP-AC-3F-2010 |  | FCU's Installation | 8d | 2015-05-12 | 2015-05-20 | BL2-MEP-AC-3F-1000, BL2-MEP-AC-2F-2020, BL2-FN-3F-1010 | 101d | 14d | Cash Flow [5992.06 h]; Pipe Fitter - CHW [96 h]; Excavation [8] | 5,992.06 | MEP | AC | 2nd Fix | 2f |
| BL2-MEP-AC-3F-2000 |  | Duct Installation and Insulation | 21d | 2015-05-21 | 2015-06-12 | BL2-MEP-AC-3F-1000, BL2-MEP-AC-2F-2000, BL2-FN-3F-1010 | 45d | 0d | Cash Flow [4329.94 h]; Ductman [263 h]; Excavation [21] | 4,329.94 | MEP | AC | 2nd Fix | 2f |
| BL2-MEP-AC-3F-2020 |  | Chilled Water Pipes and Fittings Installation | 21d | 2015-05-21 | 2015-06-12 | BL2-MEP-AC-3F-1000, BL2-MEP-AC-2F-2010, BL2-FN-3F-1010 | 44d | 0d | Cash Flow [5230.19 h]; Pipe Fitter - CHW [420 h]; Excavation [21] | 5,230.19 | MEP | AC | 2nd Fix | 2f |
| BL2-MEP-AC-3F-2030 |  | Duct Accessories Installation | 14d | 2015-06-13 | 2015-06-26 | BL2-MEP-AC-3F-2000, BL2-MEP-AC-2F-2030 | 75d | 7d | Cash Flow [652.97 h]; Pipe Fitter - CHW [448 h]; Excavation [14] | 652.97 | MEP | AC | 2nd Fix | 2f |
| BL2-MEP-AC-3F-2040 |  | Chilled Water Pipes Pressure Test | 6d | 2015-06-13 | 2015-06-18 | BL2-MEP-AC-3F-2020 | 74d | 0d | Cash Flow [581.12 h]; Pipe Fitter - CHW [48 h]; Excavation [6] | 581.12 | MEP | AC | 2nd Fix | 2f |
| BL2-MEP-AC-3F-2050 |  | Chilled Water Pipes Insulation | 12d | 2015-06-19 | 2015-06-30 | BL2-MEP-AC-3F-2040, BL2-MEP-AC-2F-2050 | 149d | 9d | Cash Flow [1658.21 h]; Pipe Fitter - CHW [192 h]; Excavation [12] | 1,658.21 | MEP | AC | 2nd Fix | 2f |
| BL2-MEP-AC-3F-2060 |  | Valve Package Installation | 6d | 2015-06-19 | 2015-06-24 | BL2-MEP-AC-3F-2010, BL2-MEP-AC-3F-2040 | 74d | 0d | Cash Flow [2380.49 h]; Pipe Fitter - CHW [48 h]; Excavation [6] | 2,380.49 | MEP | AC | 2nd Fix | 2f |
| BL2-MEP-AC-3F-2070 |  | FCU's Drain Pipes Installation | 3d | 2015-06-25 | 2015-06-27 | BL2-MEP-AC-3F-2010, BL2-MEP-AC-3F-2060, BL2-MEP-AC-2F-2070 | 74d | 13d | Cash Flow [516.93 h]; Pipe Fitter - CHW [24 h]; Excavation [3] | 516.93 | MEP | AC | 2nd Fix | 2f |
|  | 4 | **Final Fix** |  | 2015-07-17 | 2015-07-28 |  |  |  |  |  |  |  |  |  |
| BL2-MEP-AC-3F-3000 |  | Grills and Diffusers Fixing | 12d | 2015-07-17 | 2015-07-28 | BL2-MEP-AC-3F-2030, BL2-MEP-AC-2F-3000, BL2-FN-3F-1070 | 139d | 10d | Cash Flow [11538.6 h]; Ductman [384 h]; Excavation [12] | 11,538.61 | MEP | AC | Final F | ff |
|  | 1 | **Plumbing and Drainage Works** |  | 2015-04-06 | 2015-09-04 |  |  |  |  |  |  |  |  |  |
|  | 1 | **1st Fix** |  | 2015-04-06 | 2015-04-19 |  |  |  |  |  |  |  |  |  |
| BL2-MEP-PL-3F-1000 |  | Low Level Water Supply Pipes Installation | 12d | 2015-04-06 | 2015-04-19 | BL2-MEP-PL-2F-1000, BL2-FN-3F-1000 | 52d | 0d | Cash Flow [713.22 h]; Plumber [42 h]; Excavation [12] | 713.22 | MEP | PL & D | 1st Fix | 1f |
| BL2-MEP-PL-3F-1010 |  | Low Level Drainage Pipes Installation | 12d | 2015-04-06 | 2015-04-19 | BL2-MEP-PL-2F-1010, BL2-FN-3F-1000 | 52d | 0d | Cash Flow [2279.46 h]; Plumber [12.67 h]; Excavation [12] | 2,279.46 | MEP | PL & D | 1st Fix | 1f |
| BL2-MEP-PL-3F-1020 |  | Supports installation for High level Pipes | 12d | 2015-04-06 | 2015-04-19 | BL2-MEP-PL-2F-1020, BL2-FN-3F-1000 | 61d | 10d | Cash Flow [819.68 h]; Plumber [16.35 h]; Excavation [12] | 819.68 | MEP | PL & D | 1st Fix | 1f |
|  | 3 | **2nd Fix** |  | 2015-05-21 | 2015-07-10 |  |  |  |  |  |  |  |  |  |
| BL2-MEP-PL-3F-2000 |  | High Level Water Supply Pipes and Fittings Installation | 21d | 2015-05-21 | 2015-06-12 | BL2-MEP-PL-3F-1020, BL2-MEP-PL-3F-1000, BL2-MEP-PL-2F-2000, BL2-FN-3F-1010 | 53d | 0d | Cash Flow [1308.6 h]; Plumber [150.02 h]; Excavation [21] | 1,308.6 | MEP | PL & D | 2nd Fix | 2f |
| BL2-MEP-PL-3F-2010 |  | High Level Drainage Pipes Installation | 21d | 2015-05-21 | 2015-06-12 | BL2-MEP-PL-3F-1020, BL2-MEP-PL-3F-1010, BL2-MEP-PL-2F-2010, BL2-FN-3F-1010 | 53d | 0d | Cash Flow [6562.53 h]; Plumber [244.38 h]; Excavation [21] | 6,562.53 | MEP | PL & D | 2nd Fix | 2f |
| BL2-MEP-PL-3F-2020 |  | Water Supply Pipes Pressure Test | 6d | 2015-06-13 | 2015-06-18 | BL2-MEP-PL-3F-2000, BL2-MEP-PL-3F-1000, BL2-MEP-PL-2F-2020 | 83d | 15d | Cash Flow [145.74 h]; Plumber [48 h]; Excavation [6] | 145.74 | MEP | PL & D | 2nd Fix | 2f |
| BL2-MEP-PL-3F-2030 |  | Floor Drain Installation | 6d | 2015-06-29 | 2015-07-04 | BL2-MEP-PL-2F-2030, BL2-FN-3F-1060 | 61d | 0d | Cash Flow [548.14 h]; Plumber [6 h]; Excavation [6] | 548.14 | MEP | PL & D | 1st Fix | 2f |
| BL2-MEP-PL-3F-2040 |  | Drainage Pipes Gravity Test | 6d | 2015-07-05 | 2015-07-10 | BL2-MEP-PL-3F-2010, BL2-MEP-PL-3F-1010, BL2-MEP-PL-3F-2030, BL2-MEP-PL-2F-2040 | 61d | 0d | Cash Flow [820.24 h]; Plumber [48 h]; Excavation [6] | 820.24 | MEP | PL & D | 2nd Fix | 2f |
|  | 4 | **Final Fix** |  | 2015-08-16 | 2015-09-04 |  |  |  |  |  |  |  |  |  |
| BL2-MEP-PL-3F-3000 |  | Sanitary Ware Installation Including Connection | 14d | 2015-08-16 | 2015-08-29 | BL2-MEP-PL-3F-2020, BL2-MEP-PL-3F-2040, BL2-MEP-PL-2F-3000, BL2-FN-3F-1060, BL2-FN-3F-1050, BL2-FN-3F-1070, BL2-FN-3F-1090 | 66d | 0d | Cash Flow [4439.52 h]; Plumber [383.86 h]; Excavation [14] | 4,439.52 | MEP | PL & D | Final F | ff |
| BL2-MEP-PL-3F-3010 |  | Sanitary Ware Accessories Installation | 6d | 2015-08-30 | 2015-09-04 | BL2-MEP-PL-3F-3000, BL2-MEP-PL-2F-3010 | 106d | 16d | Cash Flow [160.22 h]; Plumber [36.45 h]; Excavation [6] | 160.22 | MEP | PL & D | Final F | ff |

| ID | WBS | Activity | Duration | Start | Finish | Predecessors | Total float | Free float | Resources | Cost | Responsibility | MEP Systems | MEP Steps | Fix |
| --- | --- | --- | --- | --- | --- | --- | --- | --- | --- | --- | --- | --- | --- | --- |
|  | 3 | **Fire Fighting Works** |  | 2015-10-01 | 2015-10-06 |  |  |  |  |  |  |  |  |  |
|  | 4 | **Final Fix** |  | 2015-10-01 | 2015-10-06 |  |  |  |  |  |  |  |  |  |
| BL2-MEP-FF-3F-3010 |  | Hose reel Cabinet Installation and Connection | 6d | 2015-10-01 | 2015-10-06 | BL2-MEP-FF-2F-3010, BL2-FN-3F-1050, BL2-FN-3F-1070 | 99d | 0d | Cash Flow [1330.85 h]; Plumber [192 h]; Excavation [6] | 1,330.85 | MEP | FF | Final F | ff |
| BL2-MEP-FF-3F-3000 |  | Fire Extinguisher Installation | 2d | 2015-10-02 | 2015-10-03 | BL2-MEP-FF-2F-3000, BL2-FN-3F-1050, BL2-FN-3F-1100 SS+1d | 122d | 4d | Cash Flow [1074.99 h]; Plumber [8 h]; Excavation [2] | 1,074.99 | MEP | FF | Final F | ff |
|  | 3 | **Electrical System** |  | 2015-03-26 | 2015-08-09 |  |  |  |  |  |  |  |  |  |
|  | 1 | **1st Fix** |  | 2015-03-26 | 2015-04-12 |  |  |  |  |  |  |  |  |  |
| BL2-MEP-EL-3F-1000 |  | PVC Back Boxes and Conduits Fixing in Wall | 12d | 2015-03-26 | 2015-04-08 | BL2-MEP-EL-2F-1000, BL2-FN-2F-1000 SS+3d, BL2-FN-3F-1000 FF+3d | 61d | 9d | Cash Flow [3307.67 h]; Electrician [384 h]; Excavation [12] | 3,307.67 | MEP | EL | 1st Fix | 1f |
| BL2-MEP-EL-3F-1010 |  | DB's Inclosure Fixing | 6d | 2015-04-06 | 2015-04-12 | BL2-MEP-EL-2F-1010, BL2-FN-3F-1000 | 58d | 6d | Cash Flow [2130.4 h]; Electrician [96 h]; Excavation [6] | 2,130.4 | MEP | EL | 1st Fix | 1f |
|  | 2 | **2nd Fix** |  | 2015-05-12 | 2015-06-24 |  |  |  |  |  |  |  |  |  |
| BL2-MEP-EL-3F-2000 |  | Lighting Wiring | 12d | 2015-05-12 | 2015-05-25 | BL2-MEP-EL-3F-1000, BL2-MEP-EL-2F-2000, BL2-FN-3F-1010 | 106d | 10d | Cash Flow [3566.08 h]; Electrician [241.71 h]; Excavation [12] | 3,566.08 | MEP | EL | 2nd Fix | 2f |
| BL2-MEP-EL-3F-2010 |  | Power Points Wiring | 12d | 2015-05-12 | 2015-05-25 | BL2-MEP-EL-3F-1000, BL2-MEP-EL-2F-2010, BL2-FN-3F-1010 | 106d | 10d | Cash Flow [2894.21 h]; Electrician [192 h]; Excavation [12] | 2,894.21 | MEP | EL | 2nd Fix | 2f |
| BL2-MEP-EL-3F-2020 |  | Cable Tray and Trunking Installation | 14d | 2015-05-12 | 2015-05-27 | BL2-MEP-EL-2F-2020, BL2-FN-3F-1010 | 104d | 8d | Cash Flow [9064.45 h]; Electrician [336 h]; Excavation [14] | 9,064.45 | MEP | EL | 2nd Fix | 2f |
| BL2-MEP-EL-3F-2030 |  | Emergency Light Wiring | 8d | 2015-05-12 | 2015-05-20 | BL2-MEP-EL-3F-1000, BL2-MEP-EL-2F-2060, BL2-FN-3F-1010 | 110d | 14d | Cash Flow [1202.03 h]; Electrician [128 h]; Excavation [8] | 1,202.03 | MEP | EL | 2nd Fix | 2f |
| BL2-MEP-EL-3F-2040 |  | Fire Alarm System Wiring | 12d | 2015-05-12 | 2015-05-25 | BL2-MEP-EL-3F-1000, BL2-MEP-EL-2F-2030, BL2-FN-3F-1010 | 106d | 10d | Cash Flow [7111.01 h]; Electrician [192 h]; Excavation [12] | 7,111.01 | MEP | EL | 2nd Fix | 2f |
| BL2-MEP-EL-3F-2050 |  | Low Current System Wiring | 14d | 2015-05-12 | 2015-05-27 | BL2-MEP-EL-3F-1000, BL2-FN-3F-1010 | 229d | 49d | Cash Flow [38217.8 h]; Electrician [244 h]; Excavation [14] | 38,217.78 | MEP | EL |  | 2f |
| BL2-MEP-EL-3F-2060 |  | SMDB's Installation | 6d | 2015-05-30 | 2015-06-04 | BL2-MEP-EL-3F-1000, BL2-FN-3F-1020, BL2-MEP-EL-2F-2050 | 207d | 16d | Cash Flow [4196.6 h]; Electrician [45 h]; Excavation [6] | 4,196.6 | MEP | EL | 2nd Fix | 2f |
| BL2-MEP-EL-3F-2070 |  | DB's Installation and Termination | 12d | 2015-05-30 | 2015-06-10 | BL2-MEP-EL-3F-1010, BL2-MEP-EL-2F-2070, BL2-FN-3F-1020 | 91d | 0d | Cash Flow [4970.93 h]; Electrician [288 h]; Excavation [12] | 4,970.93 | MEP | EL | 2nd Fix | 2f |
| BL2-MEP-EL-3F-3040 |  | Power Cable Puling | 14d | 2015-06-11 | 2015-06-24 | BL2-MEP-EL-3F-2020, BL2-MEP-EL-3F-2000, BL2-MEP-EL-3F-2010, BL2-MEP-EL-2F-3050, BL2-MEP-EL-3F-2070 | 139d | 8d | Cash Flow [6361.76 h]; Electrician [168 h]; Excavation [14] | 6,361.76 | MEP | EL | 2nd Fix | 2f |
|  | 3 | **Final Fix** |  | 2015-07-17 | 2015-08-09 |  |  |  |  |  |  |  |  |  |
| BL2-MEP-EL-3F-3000 |  | Lights Fitting Fixing | 14d | 2015-07-17 | 2015-07-30 | BL2-MEP-EL-3F-2000, BL2-FN-3F-1070, BL2-MEP-EL-2F-3000 | 117d | 8d | Cash Flow [7322.66 h]; Electrician [244 h]; Excavation [14] | 7,322.66 | MEP | EL | Final F | ff |
| BL2-MEP-EL-3F-3010 |  | Emergency Light Fixing | 8d | 2015-07-17 | 2015-07-24 | BL2-MEP-EL-3F-2030, BL2-FN-3F-1070, BL2-MEP-EL-2F-3010 | 166d | 14d | Cash Flow [5714.02 h]; Electrician [128 h]; Excavation [8] | 5,714.02 | MEP | EL | Final F | ff |
| BL2-MEP-EL-3F-3020 |  | Fire Alarm System Detector Installation | 12d | 2015-07-17 | 2015-07-28 | BL2-MEP-EL-3F-2040, BL2-FN-3F-1070, BL2-MEP-EL-2F-3020 | 131d | 10d | Cash Flow [4034.38 h]; Electrician [192 h]; Excavation [12] | 4,034.38 | MEP | EL | Final F | ff |
| BL2-MEP-EL-3F-3030 |  | Despature for Low Current System Installation | 14d | 2015-07-17 | 2015-07-30 | BL2-MEP-EL-3F-2050, BL2-FN-3F-1020, BL2-FN-3F-1070 | 180d | 0d | Cash Flow [72738.2 h]; Electrician [336 h]; Excavation [14] | 72,738.16 | MEP | EL |  | ff |
| BL2-MEP-EL-3F-3060 |  | Sockets and Switches Fixing | 8d | 2015-07-17 | 2015-07-24 | BL2-MEP-EL-3F-2010, BL2-FN-3F-1070, BL2-MEP-EL-2F-3060 | 159d | 14d | Cash Flow [1166.96 h]; Electrician [128 h]; Excavation [8] | 1,166.96 | MEP | EL | Final F | ff |
| BL2-MEP-EL-3F-3070 |  | SMDB's Termination and Final Connection | 6d | 2015-07-17 | 2015-07-22 | BL2-MEP-EL-3F-2060, BL2-MEP-EL-2F-3070, BL2-MEP-EL-3F-3040, BL2-FN-3F-1070 | 165d | 16d | Cash Flow [2785.83 h]; Electrician [192 h]; Excavation [6] | 2,785.82 | MEP | EL | Final F | ff |
| BL2-MEP-EL-3F-3050 |  | Low Current System Outlet installation and Connection | 10d | 2015-07-31 | 2015-08-09 | BL2-MEP-EL-3F-2050, BL2-MEP-EL-3F-3030 | 180d | 58d | Cash Flow [3860.79 h]; Electrician [80 h]; Excavation [10] | 3,860.79 | MEP | EL |  | ff |

| ID | WBS | Activity | Duration | Start | Finish | Predecessors | Total float | Free float | Resources | Cost | Structural | Responsibility | MEP Systems | MEP Steps | Finishing | Fix |
| --- | --- | --- | --- | --- | --- | --- | --- | --- | --- | --- | --- | --- | --- | --- | --- | --- |
|  | 7 | **4th Floor** |  | 2015-01-20 | 2015-10-16 |  |  |  |  |  |  |  |  |  |  |  |
|  | 1 | **Structural** |  | 2015-01-20 | 2015-02-14 |  |  |  |  |  |  |  |  |  |  |  |
| BL2-ST-4F-1000 |  | Reinforcement for Verticals | 5d | 2015-01-20 | 2015-01-25 | ENG-STR-BL2-APP240, ENG-STR-BL2-APP250, ENG-STR-BL2-APP260, ENG-STR-BL2-APP220, ENG-STR-BL2-APP230, BL2-ST-3F-1070 | 24d | 0d | MNHRS [842.2 h]; Cash Flow [56308.2 h]; Reinforcement [37996.5]; Excavation [5] | 56,308.21 | STR |  |  |  |  |  |
| BL2-ST-4F-1010 |  | MEP Works in Vertical Element | 5d | 2015-01-20 | 2015-01-25 | ENGMEP8650, BL2-ST-4F-1000 FF | 29d | 5d | Cash Flow [1798.55 h]; Electrician [160 h]; Excavation [5] | 1,798.55 |  | MEP | EL | B.W |  |  |
| BL2-ST-4F-1020 |  | FW for Verticals | 5d | 2015-01-26 | 2015-01-31 | BL2-ST-4F-1000 | 24d | 0d | MNHRS [9250.41 h]; Cash Flow [40668.8 h]; FW [1154.6]; Excavation [5] | 40,668.84 | STR |  |  |  |  |  |
| BL2-ST-4F-1030 |  | Concrete Verticals | 1d | 2015-02-01 | 2015-02-01 | BL2-ST-4F-1020, BL2-ST-4F-1010 | 24d | 0d | MNHRS [2003.27 h]; Cash Flow [33907.1 h]; Concrete [174]; Excavation [1] | 33,907.07 | STR |  |  |  |  |  |
| BL2-ST-4F-1040 |  | FW for Slab | 5d | 2015-02-02 | 2015-02-07 | BL2-ST-4F-1030 | 24d | 0d | MNHRS [16202.4 h]; Cash Flow [71232.8 h]; FW [1983]; Excavation [5] | 71,232.75 | STR |  |  |  |  |  |
| BL2-ST-4F-1050 |  | Reinforcement for Slab | 5d | 2015-02-08 | 2015-02-12 | BL2-ST-4F-1040 | 24d | 0d | MNHRS [1629.17 h]; Cash Flow [108924 h]; Reinforcement [81838]; Excavation [5] | 108,923.67 | STR |  |  |  |  |  |
| BL2-ST-4F-1060 |  | MEP Works in Slab & Beams | 5d | 2015-02-08 | 2015-02-12 | ENGMEP8650, BL2-ST-4F-1050 FF | 24d | 0d | Cash Flow [3349.02 h]; Electrician [320 h]; Excavation [5] | 3,349.02 |  | MEP | EL | B.W |  |  |
| BL2-ST-4F-1070 |  | Concrete for Slab | 1d | 2015-02-14 | 2015-02-14 | BL2-ST-4F-1050, BL2-ST-4F-1060 | 24d | 0d | MNHRS [4319.68 h]; Cash Flow [73114.5 h]; Concrete [442]; Excavation [1] | 73,114.49 | STR |  |  |  |  |  |
|  | 2 | **Fiishing** |  | 2015-04-07 | 2015-10-16 |  |  |  |  |  |  |  |  |  |  |  |
| BL2-FN-4F-1000 |  | Block Works | 21d | 2015-04-07 | 2015-04-30 | BL2-ST-5F-1070 FS+12d, BL2-ST-6F-1070 | 51d | 0d | Cash Flow [26499 h]; MNHRS [1993 h]; BW [520]; Excavation [21] | 26,498.96 |  |  |  |  | FIN |  |
| BL2-FN-4F-1010 |  | Plaster | 19d | 2015-05-16 | 2015-06-05 | BL2-FN-4F-1000, BL2-MEP-PL-4F-1000, BL2-MEP-PL-4F-1020, BL2-MEP-PL-4F-1010, BL2-MEP-EL-4F-1000, BL2-MEP-EL-4F-1010 | 51d | 0d | MNHRS [3122 h]; Cash Flow [36698.9 h]; Plaster [1041]; Excavation [19] | 36,698.89 |  |  |  |  | FIN |  |
| BL2-FN-4F-1020 |  | Paint 1st Coat | 15d | 2015-06-06 | 2015-06-20 | BL2-FN-4F-1010 | 54d | 0d | MNHRS [312.2 h]; Cash Flow [5651.89 h]; Painting [1040.8]; Excavation [15] | 5,651.89 |  |  |  |  | FIN |  |
| BL2-FN-4F-1030 |  | Ceiling Paint | 10d | 2015-06-16 | 2015-06-25 | BL2-FN-4F-1020 SS+10d | 54d | 0d | MNHRS [29.34 h]; Cash Flow [177.03 h]; Painting [32.6]; Excavation [10] | 177.03 |  |  |  |  | FIN |  |
| BL2-FN-4F-1040 |  | Waterproofing | 5d | 2015-06-26 | 2015-06-30 | BL2-FN-4F-1030 | 54d | 0d | MNHRS [7 h]; Cash Flow [131.28 h]; Waterproofing [22.32]; Excavation [5] | 131.28 |  |  |  |  | FIN |  |
| BL2-FN-4F-1050 |  | Wall Tiling | 10d | 2015-06-26 | 2015-07-05 | BL2-FN-4F-1030 | 72d | 18d | MNHRS [1663.8 h]; Cash Flow [7382.46 h]; Tiling [167]; Excavation [10] | 7,382.46 |  |  |  |  | FIN |  |
| BL2-FN-4F-1060 |  | Flooring Works | 20d | 2015-07-01 | 2015-07-20 | BL2-FN-4F-1040 | 54d | 0d | MNHRS [1318 h]; Cash Flow [30728.5 h]; Tiling [200.7]; Excavation [20] | 30,728.51 |  |  |  |  | FIN |  |
| BL2-FN-4F-1070 |  | False Ceiling | 15d | 2015-07-24 | 2015-08-07 | BL2-FN-4F-1050, BL2-MEP-AC-4F-2070 FF+6d, BL2-MEP-PL-4F-2020 FF+6d, BL2-MEP-PL-4F-2040 FF+6d, BL2-MEP-AC-4F-2030 FF+6d, BL2-MEP-EL-4F-2030 FF+6d, BL2-MEP-EL-4F-2000 FF+6d, BL2-MEP-EL-4F-2010 FF+6d, BL2-MEP-EL-4F-2020 FF+6d, BL2-MEP-EL-4F-2040 FF+6d, BL2-MEP-EL-4F-2070 FF+6d | 54d | 0d | Cash Flow [49533 h]; False Ceiling [1267]; MNHRS [6335 h]; Excavation [15] | 49,533 |  |  |  |  | FIN |  |
| BL2-FN-4F-1080 |  | Hand Rails for Stairs | 15d | 2015-08-08 | 2015-08-22 | BL2-FN-4F-1070 | 54d | 0d | Cash Flow [9483.79 h]; Metal Works & Handrail [20]; MNHRS [43 h]; Excavation [15] | 9,483.79 |  |  |  |  | FIN |  |
| BL2-FN-4F-1090 |  | Doors Installation | 15d | 2015-08-23 | 2015-09-06 | BL2-FN-4F-1080, BL2-FN-3F-1090 | 54d | 0d | Cash Flow [25990.1 h]; Excavation [15] | 25,990.11 |  |  |  |  | FIN |  |
| BL2-FN-4F-1100 |  | Final Paint | 10d | 2015-10-07 | 2015-10-16 | BL2-FN-4F-1060, BL2-MEP-EL-4F-3050 FF+4d, BL2-MEP-EL-4F-3030 FF+4d, BL2-MEP-EL-4F-3010 FF+4d, BL2-MEP-EL-4F-3020 FF+4d, BL2-MEP-EL-4F-3060 FF+4d, BL2-MEP-PL-4F-3000 FF+4d, BL2-MEP-PL-4F-3010 FF+4d, BL2-MEP-FF-4F-3010 FF+4d, BL2-MEP-EL-4F-3070 FF+4d, BL2-MEP-EL-4F-3040 FF+4d | 118d | 0d | Excavation [10] |  |  |  |  |  | FIN |  |
|  | 8 | **MEP Work** |  | 2015-04-21 | 2015-10-12 |  |  |  |  |  |  |  |  |  |  |  |
|  | 1 | **Mechanical System** |  | 2015-05-02 | 2015-10-12 |  |  |  |  |  |  |  |  |  |  |  |
|  | 2 | **HVAC Works** |  | 2015-05-02 | 2015-08-19 |  |  |  |  |  |  |  |  |  |  |  |
|  | 1 | **1st Fix** |  | 2015-05-02 | 2015-05-14 |  |  |  |  |  |  |  |  |  |  |  |
| BL2-MEP-AC-4F-1000 |  | Supports and Hungers Fixing | 12d | 2015-05-02 | 2015-05-14 | BL2-MEP-AC-3F-1000, BL2-FN-4F-1000 | 70d | 10d | Cash Flow [326.47 h]; Ductman [192 h]; Excavation [12] | 326.47 |  | MEP | AC | 1st Fix |  | 1f |

| ID | WBS | Activity | Duration | Start | Finish | Predecessors | Total float | Free float | Resources | Cost | Responsibility | MEP Systems | MEP Steps | Fix |
| --- | --- | --- | --- | --- | --- | --- | --- | --- | --- | --- | --- | --- | --- | --- |
|  | 3 | **2nd Fix** |  | 2015-06-06 | 2015-07-21 |  |  |  |  |  |  |  |  |  |
| BL2-MEP-AC-4F-2010 |  | FCU's Installation | 8d | 2015-06-06 | 2015-06-13 | BL2-MEP-AC-4F-1000, BL2-MEP-AC-3F-2010, BL2-FN-4F-1010 | 94d | 14d | Cash Flow [5992.06 h]; Pipe Fitter - CHW [96 h]; Excavation [8] | 5,992.06 | MEP | AC | 2nd Fix | 2f |
| BL2-MEP-AC-4F-2000 |  | Duct Installation and Insulation | 21d | 2015-06-13 | 2015-07-03 | BL2-MEP-AC-4F-1000, BL2-MEP-AC-3F-2000, BL2-FN-4F-1010 | 45d | 0d | Cash Flow [4329.94 h]; Ductman [263 h]; Excavation [21] | 4,329.94 | MEP | AC | 2nd Fix | 2f |
| BL2-MEP-AC-4F-2020 |  | Chilled Water Pipes and Fittings Installation | 21d | 2015-06-13 | 2015-07-03 | BL2-MEP-AC-4F-1000, BL2-MEP-AC-3F-2020, BL2-FN-4F-1010 | 44d | 0d | Cash Flow [5230.19 h]; Pipe Fitter - CHW [420 h]; Excavation [21] | 5,230.19 | MEP | AC | 2nd Fix | 2f |
| BL2-MEP-AC-4F-2030 |  | Duct Accessories Installation | 14d | 2015-07-04 | 2015-07-17 | BL2-MEP-AC-4F-2000, BL2-MEP-AC-3F-2030 | 69d | 7d | Cash Flow [652.97 h]; Pipe Fitter - CHW [448 h]; Excavation [14] | 652.97 | MEP | AC | 2nd Fix | 2f |
| BL2-MEP-AC-4F-2040 |  | Chilled Water Pipes Pressure Test | 6d | 2015-07-04 | 2015-07-09 | BL2-MEP-AC-4F-2020 | 68d | 0d | Cash Flow [581.12 h]; Pipe Fitter - CHW [48 h]; Excavation [6] | 581.12 | MEP | AC | 2nd Fix | 2f |
| BL2-MEP-AC-4F-2050 |  | Chilled Water Pipes Insulation | 12d | 2015-07-10 | 2015-07-21 | BL2-MEP-AC-4F-2040, BL2-MEP-AC-3F-2050 | 140d | 9d | Cash Flow [1658.21 h]; Pipe Fitter - CHW [192 h]; Excavation [12] | 1,658.21 | MEP | AC | 2nd Fix | 2f |
| BL2-MEP-AC-4F-2060 |  | Valve Package Installation | 6d | 2015-07-10 | 2015-07-15 | BL2-MEP-AC-4F-2010, BL2-MEP-AC-4F-2040 | 68d | 0d | Cash Flow [2380.49 h]; Pipe Fitter - CHW [48 h]; Excavation [6] | 2,380.49 | MEP | AC | 2nd Fix | 2f |
| BL2-MEP-AC-4F-2070 |  | FCU's Drain Pipes Installation | 3d | 2015-07-16 | 2015-07-18 | BL2-MEP-AC-4F-2010, BL2-MEP-AC-4F-2060, BL2-MEP-AC-3F-2070 | 68d | 14d | Cash Flow [516.93 h]; Pipe Fitter - CHW [24 h]; Excavation [3] | 516.93 | MEP | AC | 2nd Fix | 2f |
|  | 4 | **Final Fix** |  | 2015-08-08 | 2015-08-19 |  |  |  |  |  |  |  |  |  |
| BL2-MEP-AC-4F-3000 |  | Grills and Diffusers Fixing | 12d | 2015-08-08 | 2015-08-19 | BL2-MEP-AC-4F-2030, BL2-MEP-AC-3F-3000, BL2-FN-4F-1070 | 129d | 10d | Cash Flow [11538.6 h]; Ductman [384 h]; Excavation [12] | 11,538.61 | MEP | AC | Final F | ff |
|  | 1 | **Plumbing and Drainage Works** |  | 2015-05-02 | 2015-09-26 |  |  |  |  |  |  |  |  |  |
|  | 1 | **1st Fix** |  | 2015-05-02 | 2015-05-14 |  |  |  |  |  |  |  |  |  |
| BL2-MEP-PL-4F-1000 |  | Low Level Water Supply Pipes Installation | 12d | 2015-05-02 | 2015-05-14 | BL2-MEP-PL-3F-1000, BL2-FN-4F-1000 | 51d | 0d | Cash Flow [713.22 h]; Plumber [42 h]; Excavation [12] | 713.22 | MEP | PL & D | 1st Fix | 1f |
| BL2-MEP-PL-4F-1010 |  | Low Level Drainage Pipes Installation | 12d | 2015-05-02 | 2015-05-14 | BL2-MEP-PL-3F-1010, BL2-FN-4F-1000 | 51d | 0d | Cash Flow [2279.46 h]; Plumber [12.67 h]; Excavation [12] | 2,279.46 | MEP | PL & D | 1st Fix | 1f |
| BL2-MEP-PL-4F-1020 |  | Supports installation for High level Pipes | 12d | 2015-05-02 | 2015-05-14 | BL2-MEP-PL-3F-1020, BL2-FN-4F-1000 | 51d | 0d | Cash Flow [819.68 h]; Plumber [16.35 h]; Excavation [12] | 819.68 | MEP | PL & D | 1st Fix | 1f |
|  | 3 | **2nd Fix** |  | 2015-06-13 | 2015-08-01 |  |  |  |  |  |  |  |  |  |
| BL2-MEP-PL-4F-2000 |  | High Level Water Supply Pipes and Fittings Installation | 21d | 2015-06-13 | 2015-07-03 | BL2-MEP-PL-4F-1020, BL2-MEP-PL-4F-1000, BL2-MEP-PL-3F-2000, BL2-FN-4F-1010 | 53d | 0d | Cash Flow [1308.6 h]; Plumber [150.02 h]; Excavation [21] | 1,308.6 | MEP | PL & D | 2nd Fix | 2f |
| BL2-MEP-PL-4F-2010 |  | High Level Drainage Pipes Installation | 21d | 2015-06-13 | 2015-07-03 | BL2-MEP-PL-4F-1020, BL2-MEP-PL-4F-1010, BL2-MEP-PL-3F-2010, BL2-FN-4F-1010 | 53d | 0d | Cash Flow [6562.53 h]; Plumber [244.38 h]; Excavation [21] | 6,562.53 | MEP | PL & D | 2nd Fix | 2f |
| BL2-MEP-PL-4F-2020 |  | Water Supply Pipes Pressure Test | 6d | 2015-07-04 | 2015-07-09 | BL2-MEP-PL-4F-2000, BL2-MEP-PL-4F-1000, BL2-MEP-PL-3F-2020 | 77d | 15d | Cash Flow [145.74 h]; Plumber [48 h]; Excavation [6] | 145.74 | MEP | PL & D | 2nd Fix | 2f |
| BL2-MEP-PL-4F-2030 |  | Floor Drain Installation | 6d | 2015-07-21 | 2015-07-26 | BL2-MEP-PL-3F-2030, BL2-FN-4F-1060 | 54d | 0d | Cash Flow [548.14 h]; Plumber [6 h]; Excavation [6] | 548.14 | MEP | PL & D | 1st Fix | 2f |
| BL2-MEP-PL-4F-2040 |  | Drainage Pipes Gravity Test | 6d | 2015-07-27 | 2015-08-01 | BL2-MEP-PL-4F-2010, BL2-MEP-PL-4F-1010, BL2-MEP-PL-4F-2030, BL2-MEP-PL-3F-2040 | 54d | 0d | Cash Flow [820.24 h]; Plumber [48 h]; Excavation [6] | 820.24 | MEP | PL & D | 2nd Fix | 2f |
|  | 4 | **Final Fix** |  | 2015-09-07 | 2015-09-26 |  |  |  |  |  |  |  |  |  |
| BL2-MEP-PL-4F-3000 |  | Sanitary Ware Installation Including Connection | 14d | 2015-09-07 | 2015-09-20 | BL2-MEP-PL-4F-2020, BL2-MEP-PL-4F-2040, BL2-MEP-PL-3F-3000, BL2-FN-4F-1050, BL2-FN-4F-1060, BL2-FN-4F-1070, BL2-FN-4F-1090 | 58d | 0d | Cash Flow [4439.52 h]; Plumber [383.86 h]; Excavation [14] | 4,439.52 | MEP | PL & D | Final F | ff |
| BL2-MEP-PL-4F-3010 |  | Sanitary Ware Accessories Installation | 6d | 2015-09-21 | 2015-09-26 | BL2-MEP-PL-4F-3000, BL2-MEP-PL-3F-3010 | 90d | 16d | Cash Flow [160.22 h]; Plumber [36.45 h]; Excavation [6] | 160.22 | MEP | PL & D | Final F | ff |

| ID | WBS | Activity | Duration | Start | Finish | Predecessors | Total float | Free float | Resources | Cost | Responsibility | MEP Systems | MEP Steps | Fix |
| --- | --- | --- | --- | --- | --- | --- | --- | --- | --- | --- | --- | --- | --- | --- |
|  | 3 | **Fire Fighting Works** |  | 2015-10-07 | 2015-10-12 |  |  |  |  |  |  |  |  |  |
|  | 4 | **Final Fix** |  | 2015-10-07 | 2015-10-12 |  |  |  |  |  |  |  |  |  |
| BL2-MEP-FF-4F-3010 |  | Hose reel Cabinet Installation and Connection | 6d | 2015-10-07 | 2015-10-12 | BL2-MEP-FF-3F-3010, BL2-FN-4F-1050, BL2-FN-4F-1070 | 99d | 0d | Cash Flow [1330.85 h]; Plumber [192 h]; Excavation [6] | 1,330.85 | MEP | FF | Final F | ff |
| BL2-MEP-FF-4F-3000 |  | Fire Extinguisher Installation | 2d | 2015-10-08 | 2015-10-09 | BL2-MEP-FF-3F-3000, BL2-FN-4F-1050, BL2-FN-4F-1100 SS+1d | 118d | 4d | Cash Flow [1074.99 h]; Plumber [8 h]; Excavation [2] | 1,074.99 | MEP | FF | Final F | ff |
|  | 3 | **Electrical System** |  | 2015-04-21 | 2015-08-31 |  |  |  |  |  |  |  |  |  |
|  | 1 | **1st Fix** |  | 2015-04-21 | 2015-05-07 |  |  |  |  |  |  |  |  |  |
| BL2-MEP-EL-4F-1000 |  | PVC Back Boxes and Conduits Fixing in Wall | 12d | 2015-04-21 | 2015-05-04 | BL2-MEP-EL-3F-1000, BL2-FN-4F-1000 SS+3d, BL2-FN-4F-1000 FF+3d | 58d | 9d | Cash Flow [3307.67 h]; Electrician [384 h]; Excavation [12] | 3,307.67 | MEP | EL | 1st Fix | 1f |
| BL2-MEP-EL-4F-1010 |  | DB's Inclosure Fixing | 6d | 2015-05-02 | 2015-05-07 | BL2-MEP-EL-3F-1010, BL2-FN-4F-1000 | 57d | 6d | Cash Flow [2130.4 h]; Electrician [96 h]; Excavation [6] | 2,130.4 | MEP | EL | 1st Fix | 1f |
|  | 2 | **2nd Fix** |  | 2015-06-06 | 2015-07-16 |  |  |  |  |  |  |  |  |  |
| BL2-MEP-EL-4F-2000 |  | Lighting Wiring | 12d | 2015-06-06 | 2015-06-17 | BL2-MEP-EL-4F-1000, BL2-MEP-EL-3F-2000, BL2-FN-4F-1010 | 99d | 10d | Cash Flow [3566.08 h]; Electrician [241.71 h]; Excavation [12] | 3,566.08 | MEP | EL | 2nd Fix | 2f |
| BL2-MEP-EL-4F-2010 |  | Power Points Wiring | 12d | 2015-06-06 | 2015-06-17 | BL2-MEP-EL-4F-1000, BL2-MEP-EL-3F-2010, BL2-FN-4F-1010 | 99d | 10d | Cash Flow [2894.21 h]; Electrician [192 h]; Excavation [12] | 2,894.21 | MEP | EL | 2nd Fix | 2f |
| BL2-MEP-EL-4F-2020 |  | Cable Tray and Trunking Installation | 14d | 2015-06-06 | 2015-06-19 | BL2-MEP-EL-3F-2020, BL2-FN-4F-1010 | 97d | 8d | Cash Flow [9064.45 h]; Electrician [336 h]; Excavation [14] | 9,064.45 | MEP | EL | 2nd Fix | 2f |
| BL2-MEP-EL-4F-2030 |  | Emergency Light Wiring | 8d | 2015-06-06 | 2015-06-13 | BL2-MEP-EL-4F-1000, BL2-MEP-EL-3F-2030, BL2-FN-4F-1010 | 103d | 14d | Cash Flow [1202.03 h]; Electrician [128 h]; Excavation [8] | 1,202.03 | MEP | EL | 2nd Fix | 2f |
| BL2-MEP-EL-4F-2040 |  | Fire Alarm System Wiring | 12d | 2015-06-06 | 2015-06-17 | BL2-MEP-EL-4F-1000, BL2-MEP-EL-3F-2040, BL2-FN-4F-1010 | 99d | 10d | Cash Flow [7111.01 h]; Electrician [192 h]; Excavation [12] | 7,111.01 | MEP | EL | 2nd Fix | 2f |
| BL2-MEP-EL-4F-2050 |  | Low Current System Wiring | 14d | 2015-06-06 | 2015-06-19 | BL2-MEP-EL-4F-1000, BL2-FN-4F-1010 | 209d | 49d | Cash Flow [38217.8 h]; Electrician [244 h]; Excavation [14] | 38,217.78 | MEP | EL |  | 2f |
| BL2-MEP-EL-4F-2060 |  | SMDB's Installation | 6d | 2015-06-21 | 2015-06-26 | BL2-MEP-EL-4F-1000, BL2-FN-4F-1020, BL2-MEP-EL-3F-2060 | 191d | 16d | Cash Flow [4196.6 h]; Electrician [45 h]; Excavation [6] | 4,196.6 | MEP | EL | 2nd Fix | 2f |
| BL2-MEP-EL-4F-2070 |  | DB's Installation and Termination | 12d | 2015-06-21 | 2015-07-02 | BL2-MEP-EL-4F-1010, BL2-MEP-EL-3F-2070, BL2-FN-4F-1020 | 84d | 0d | Cash Flow [4970.93 h]; Electrician [288 h]; Excavation [12] | 4,970.93 | MEP | EL | 2nd Fix | 2f |
| BL2-MEP-EL-4F-3000 |  | Power Cable Puling | 14d | 2015-07-03 | 2015-07-16 | BL2-MEP-EL-4F-2020, BL2-MEP-EL-4F-2000, BL2-MEP-EL-4F-2010, BL2-MEP-EL-3F-3040, BL2-MEP-EL-4F-2070 | 131d | 8d | Cash Flow [6361.76 h]; Electrician [168 h]; Excavation [14] | 6,361.76 | MEP | EL | 2nd Fix | 2f |
|  | 3 | **Final Fix** |  | 2015-08-08 | 2015-08-31 |  |  |  |  |  |  |  |  |  |
| BL2-MEP-EL-4F-3010 |  | Lights Fitting Fixing | 14d | 2015-08-08 | 2015-08-21 | BL2-MEP-EL-4F-2000, BL2-FN-4F-1070, BL2-MEP-EL-3F-3000 | 109d | 8d | Cash Flow [7322.66 h]; Electrician [244 h]; Excavation [14] | 7,322.66 | MEP | EL | Final F | ff |
| BL2-MEP-EL-4F-3020 |  | Emergency Light Fixing | 8d | 2015-08-08 | 2015-08-15 | BL2-MEP-EL-4F-2030, BL2-FN-4F-1070, BL2-MEP-EL-3F-3010 | 152d | 14d | Cash Flow [5714.02 h]; Electrician [128 h]; Excavation [8] | 5,714.02 | MEP | EL | Final F | ff |
| BL2-MEP-EL-4F-3030 |  | Fire Alarm System Detector Installation | 12d | 2015-08-08 | 2015-08-19 | BL2-MEP-EL-4F-2040, BL2-FN-4F-1070, BL2-MEP-EL-3F-3020 | 121d | 10d | Cash Flow [4034.38 h]; Electrician [192 h]; Excavation [12] | 4,034.38 | MEP | EL | Final F | ff |
| BL2-MEP-EL-4F-3040 |  | Despature for Low Current System Installation | 14d | 2015-08-08 | 2015-08-21 | BL2-MEP-EL-4F-2050, BL2-FN-4F-1020, BL2-FN-4F-1070 | 160d | 0d | Cash Flow [72738.2 h]; Electrician [336 h]; Excavation [14] | 72,738.16 | MEP | EL |  | ff |
| BL2-MEP-EL-4F-3060 |  | Sockets and Switches Fixing | 8d | 2015-08-08 | 2015-08-15 | BL2-MEP-EL-4F-2010, BL2-FN-4F-1070, BL2-MEP-EL-3F-3060 | 145d | 14d | Cash Flow [1166.96 h]; Electrician [128 h]; Excavation [8] | 1,166.96 | MEP | EL | Final F | ff |
| BL2-MEP-EL-4F-3070 |  | SMDB's Termination and Final Connection | 6d | 2015-08-08 | 2015-08-13 | BL2-MEP-EL-4F-2060, BL2-MEP-EL-4F-2010, BL2-MEP-EL-3F-3070, BL2-MEP-EL-4F-3000, BL2-FN-4F-1070 | 149d | 16d | Cash Flow [2785.83 h]; Electrician [192 h]; Excavation [6] | 2,785.82 | MEP | EL | Final F | ff |
| BL2-MEP-EL-4F-3050 |  | Low Current System Outlet installation and Connection | 10d | 2015-08-22 | 2015-08-31 | BL2-MEP-EL-4F-2050, BL2-MEP-EL-4F-3040 | 160d | 42d | Cash Flow [3860.79 h]; Electrician [80 h]; Excavation [10] | 3,860.79 | MEP | EL |  | ff |

| ID | WBS | Activity | Duration | Start | Finish | Predecessors | Total float | Free float | Resources | Cost | Structural | Responsibility | MEP Systems | MEP Steps | Finishing | Fix |
| --- | --- | --- | --- | --- | --- | --- | --- | --- | --- | --- | --- | --- | --- | --- | --- | --- |
|  | 8 | **5th Floor** |  | 2015-02-15 | 2015-10-22 |  |  |  |  |  |  |  |  |  |  |  |
|  | 1 | **Structural** |  | 2015-02-15 | 2015-03-11 |  |  |  |  |  |  |  |  |  |  |  |
| BL2-ST-5F-1000 |  | Reinforcement for Verticals | 5d | 2015-02-15 | 2015-02-19 | ENG-STR-BL2-APP270, ENG-STR-BL2-APP280, BL2-ST-4F-1070 | 24d | 0d | MNHRS [842.2 h]; Cash Flow [56308.2 h]; Reinforcement [37996.5]; Excavation [5] | 56,308.21 | STR |  |  |  |  |  |
| BL2-ST-5F-1010 |  | MEP Works in Vertical Element | 5d | 2015-02-15 | 2015-02-19 | ENGMEP8650, BL2-ST-5F-1000 FF | 29d | 5d | Cash Flow [1798.55 h]; Electrician [160 h]; Excavation [5] | 1,798.55 |  | MEP | EL | B.W |  |  |
| BL2-ST-5F-1020 |  | FW for Verticals | 5d | 2015-02-21 | 2015-02-25 | BL2-ST-5F-1000 | 24d | 0d | MNHRS [9250.41 h]; Cash Flow [40668.8 h]; FW [1154.6]; Excavation [5] | 40,668.84 | STR |  |  |  |  |  |
| BL2-ST-5F-1030 |  | Concrete Verticals | 1d | 2015-02-26 | 2015-02-26 | BL2-ST-5F-1020, BL2-ST-5F-1010 | 24d | 0d | MNHRS [2003.27 h]; Cash Flow [33907.1 h]; Concrete [174]; Excavation [1] | 33,907.07 | STR |  |  |  |  |  |
| BL2-ST-5F-1040 |  | FW for Slab | 5d | 2015-02-28 | 2015-03-04 | BL2-ST-5F-1030 | 24d | 0d | MNHRS [16202.4 h]; Cash Flow [71232.8 h]; FW [1983]; Excavation [5] | 71,232.75 | STR |  |  |  |  |  |
| BL2-ST-5F-1050 |  | Reinforcement for Slab | 5d | 2015-03-05 | 2015-03-10 | BL2-ST-5F-1040 | 24d | 0d | MNHRS [1629.17 h]; Cash Flow [108924 h]; Reinforcement [81838]; Excavation [5] | 108,923.67 | STR |  |  |  |  |  |
| BL2-ST-5F-1060 |  | MEP Works in Slab & Beams | 5d | 2015-03-05 | 2015-03-10 | ENGMEP8650, BL2-ST-5F-1050 FF | 24d | 0d | Cash Flow [3349.02 h]; Electrician [320 h]; Excavation [5] | 3,349.02 |  | MEP | EL | B.W |  |  |
| BL2-ST-5F-1070 |  | Concrete for Slab | 1d | 2015-03-11 | 2015-03-11 | BL2-ST-5F-1050, BL2-ST-5F-1060 | 24d | 0d | MNHRS [4319.68 h]; Cash Flow [73114.5 h]; Concrete [442]; Excavation [1] | 73,114.49 | STR |  |  |  |  |  |
|  | 2 | **Fiishing** |  | 2015-05-03 | 2015-10-22 |  |  |  |  |  |  |  |  |  |  |  |
| BL2-FN-5F-1000 |  | Block Works | 21d | 2015-05-03 | 2015-05-26 | BL2-ST-6F-1070 FS+12d, BL2-ST-7F-1070 | 47d | 0d | Cash Flow [26499 h]; MNHRS [1993 h]; BW [520]; Excavation [21] | 26,498.96 |  |  |  |  | FIN |  |
| BL2-FN-5F-1010 |  | Plaster | 19d | 2015-06-09 | 2015-06-27 | BL2-FN-5F-1000, BL2-MEP-PL-5F-1010, BL2-MEP-PL-5F-1000, BL2-MEP-EL-5F-1010, BL2-MEP-EL-5F-1000 | 47d | 0d | MNHRS [3122 h]; Cash Flow [36698.9 h]; Plaster [1041]; Excavation [19] | 36,698.89 |  |  |  |  | FIN |  |
| BL2-FN-5F-1020 |  | Paint 1st Coat | 15d | 2015-06-28 | 2015-07-12 | BL2-FN-5F-1010 | 47d | 0d | MNHRS [312.2 h]; Cash Flow [5651.89 h]; Painting [1040.8]; Excavation [15] | 5,651.89 |  |  |  |  | FIN |  |
| BL2-FN-5F-1030 |  | Ceiling Paint | 10d | 2015-07-08 | 2015-07-17 | BL2-FN-5F-1020 SS+10d | 47d | 0d | MNHRS [29.34 h]; Cash Flow [177.03 h]; Painting [32.6]; Excavation [10] | 177.03 |  |  |  |  | FIN |  |
| BL2-FN-5F-1040 |  | Waterproofing | 5d | 2015-07-18 | 2015-07-22 | BL2-FN-5F-1030 | 47d | 0d | MNHRS [7 h]; Cash Flow [131.28 h]; Waterproofing [22.32]; Excavation [5] | 131.28 |  |  |  |  | FIN |  |
| BL2-FN-5F-1050 |  | Wall Tiling | 10d | 2015-07-18 | 2015-07-27 | BL2-FN-5F-1030 | 65d | 18d | MNHRS [1663.8 h]; Cash Flow [7382.46 h]; Tiling [167]; Excavation [10] | 7,382.46 |  |  |  |  | FIN |  |
| BL2-FN-5F-1060 |  | Flooring Works | 20d | 2015-07-23 | 2015-08-11 | BL2-FN-5F-1040 | 47d | 0d | MNHRS [1318 h]; Cash Flow [30728.5 h]; Tiling [200.7]; Excavation [20] | 30,728.51 |  |  |  |  | FIN |  |
| BL2-FN-5F-1070 |  | False Ceiling | 15d | 2015-08-15 | 2015-08-29 | BL2-FN-5F-1050, BL2-MEP-AC-5F-2070 FF+6d, BL2-MEP-PL-5F-2020 FF+6d, BL2-MEP-PL-5F-2040 FF+6d, BL2-MEP-AC-5F-2030 FF+6d, BL2-MEP-EL-5F-2030 FF+6d, BL2-MEP-EL-5F-2000 FF+6d, BL2-MEP-EL-5F-2010 FF+6d, BL2-MEP-EL-5F-2020 FF+6d, BL2-MEP-EL-5F-2040 FF+6d, BL2-MEP-EL-5F-2070 FF+6d | 47d | 0d | Cash Flow [54765 h]; False Ceiling [1267]; MNHRS [6335 h]; Excavation [15] | 54,765 |  |  |  |  | FIN |  |
| BL2-FN-5F-1080 |  | Hand Rails for Stairs | 15d | 2015-08-30 | 2015-09-13 | BL2-FN-5F-1070 | 47d | 0d | Cash Flow [9483.79 h]; Metal Works & Handrail [20]; MNHRS [43 h]; Excavation [15] | 9,483.79 |  |  |  |  | FIN |  |
| BL2-FN-5F-1090 |  | Doors Installation | 15d | 2015-09-14 | 2015-09-28 | BL2-FN-5F-1080, BL2-FN-4F-1090 | 47d | 0d | Cash Flow [25990.1 h]; Excavation [15] | 25,990.11 |  |  |  |  | FIN |  |
| BL2-FN-5F-1100 |  | Final Paint | 10d | 2015-10-13 | 2015-10-22 | BL2-FN-5F-1060, BL2-MEP-AC-5F-3000 FF+4d, BL2-MEP-EL-5F-3050 FF+4d, BL2-MEP-EL-5F-3030 FF+4d, BL2-MEP-EL-5F-3010 FF+4d, BL2-MEP-EL-5F-3020 FF+4d, BL2-MEP-EL-5F-3070 FF+4d, BL2-MEP-PL-5F-3000 FF+4d, BL2-MEP-PL-5F-3010 FF+4d, BL2-MEP-FF-5F-3010 FF+4d, BL2-MEP-EL-5F-3060 FF+4d, BL2-MEP-EL-5F-3040 FF+4d | 114d | 0d | Excavation [10] |  |  |  |  |  | FIN |  |
|  | 9 | **MEP Work** |  | 2015-05-17 | 2015-10-18 |  |  |  |  |  |  |  |  |  |  |  |
|  | 1 | **Mechanical System** |  | 2015-05-27 | 2015-10-18 |  |  |  |  |  |  |  |  |  |  |  |
|  | 2 | **HVAC Works** |  | 2015-05-27 | 2015-09-10 |  |  |  |  |  |  |  |  |  |  |  |
|  | 1 | **1st Fix** |  | 2015-05-27 | 2015-06-08 |  |  |  |  |  |  |  |  |  |  |  |
| BL2-MEP-AC-5F-1000 |  | Supports and Hungers Fixing | 12d | 2015-05-27 | 2015-06-08 | BL2-MEP-AC-4F-1000, BL2-FN-5F-1000 | 69d | 10d | Cash Flow [326.47 h]; Ductman [192 h]; Excavation [12] | 326.47 |  | MEP | AC | 1st Fix |  | 1f |

| ID | WBS | Activity | Duration | Start | Finish | Predecessors | Total float | Free float | Resources | Cost | Responsibility | MEP Systems | MEP Steps | Fix |
| --- | --- | --- | --- | --- | --- | --- | --- | --- | --- | --- | --- | --- | --- | --- |
|  | 3 | **2nd Fix** |  | 2015-06-28 | 2015-08-11 |  |  |  |  |  |  |  |  |  |
| BL2-MEP-AC-5F-2010 |  | FCU's Installation | 8d | 2015-06-28 | 2015-07-05 | BL2-MEP-AC-5F-1000, BL2-MEP-AC-4F-2010, BL2-FN-5F-1010 | 87d | 14d | Cash Flow [5992.06 h]; Pipe Fitter - CHW [96 h]; Excavation [8] | 5,992.06 | MEP | AC | 2nd Fix | 2f |
| BL2-MEP-AC-5F-2000 |  | Duct Installation and Insulation | 21d | 2015-07-04 | 2015-07-24 | BL2-MEP-AC-5F-1000, BL2-MEP-AC-4F-2000, BL2-FN-5F-1010 | 45d | 0d | Cash Flow [4329.94 h]; Ductman [263 h]; Excavation [21] | 4,329.94 | MEP | AC | 2nd Fix | 2f |
| BL2-MEP-AC-5F-2020 |  | Chilled Water Pipes and Fittings Installation | 21d | 2015-07-04 | 2015-07-24 | BL2-MEP-AC-5F-1000, BL2-MEP-AC-4F-2020, BL2-FN-5F-1010 | 44d | 0d | Cash Flow [5230.19 h]; Pipe Fitter - CHW [420 h]; Excavation [21] | 5,230.19 | MEP | AC | 2nd Fix | 2f |
| BL2-MEP-AC-5F-2030 |  | Duct Accessories Installation | 14d | 2015-07-25 | 2015-08-07 | BL2-MEP-AC-5F-2000, BL2-MEP-AC-4F-2030 | 63d | 7d | Cash Flow [652.97 h]; Pipe Fitter - CHW [448 h]; Excavation [14] | 652.97 | MEP | AC | 2nd Fix | 2f |
| BL2-MEP-AC-5F-2040 |  | Chilled Water Pipes Pressure Test | 6d | 2015-07-25 | 2015-07-30 | BL2-MEP-AC-5F-2020 | 62d | 0d | Cash Flow [581.12 h]; Pipe Fitter - CHW [48 h]; Excavation [6] | 581.12 | MEP | AC | 2nd Fix | 2f |
| BL2-MEP-AC-5F-2050 |  | Chilled Water Pipes Insulation | 12d | 2015-07-31 | 2015-08-11 | BL2-MEP-AC-5F-2040, BL2-MEP-AC-4F-2050 | 131d | 9d | Cash Flow [1658.21 h]; Pipe Fitter - CHW [192 h]; Excavation [12] | 1,658.21 | MEP | AC | 2nd Fix | 2f |
| BL2-MEP-AC-5F-2060 |  | Valve Package Installation | 6d | 2015-07-31 | 2015-08-05 | BL2-MEP-AC-5F-2010, BL2-MEP-AC-5F-2040 | 62d | 0d | Cash Flow [2380.49 h]; Pipe Fitter - CHW [48 h]; Excavation [6] | 2,380.49 | MEP | AC | 2nd Fix | 2f |
| BL2-MEP-AC-5F-2070 |  | FCU's Drain Pipes Installation | 3d | 2015-08-06 | 2015-08-08 | BL2-MEP-AC-5F-2010, BL2-MEP-AC-5F-2060, BL2-MEP-AC-4F-2070 | 62d | 15d | Cash Flow [516.93 h]; Pipe Fitter - CHW [24 h]; Excavation [3] | 516.93 | MEP | AC | 2nd Fix | 2f |
|  | 4 | **Final Fix** |  | 2015-08-30 | 2015-09-10 |  |  |  |  |  |  |  |  |  |
| BL2-MEP-AC-5F-3000 |  | Grills and Diffusers Fixing | 12d | 2015-08-30 | 2015-09-10 | BL2-MEP-AC-5F-2030, BL2-MEP-AC-4F-3000, BL2-FN-5F-1070 | 119d | 10d | Cash Flow [11538.6 h]; Ductman [384 h]; Excavation [12] | 11,538.61 | MEP | AC | Final F | ff |
|  | 1 | **Plumbing and Drainage Works** |  | 2015-05-27 | 2015-10-18 |  |  |  |  |  |  |  |  |  |
|  | 1 | **1st Fix** |  | 2015-05-27 | 2015-06-08 |  |  |  |  |  |  |  |  |  |
| BL2-MEP-PL-5F-1000 |  | Low Level Water Supply Pipes Installation | 12d | 2015-05-27 | 2015-06-08 | BL2-MEP-PL-4F-1000, BL2-FN-5F-1000 | 47d | 0d | Cash Flow [713.22 h]; Plumber [42 h]; Excavation [12] | 713.22 | MEP | PL & D | 1st Fix | 1f |
| BL2-MEP-PL-5F-1010 |  | Low Level Drainage Pipes Installation | 12d | 2015-05-27 | 2015-06-08 | BL2-MEP-PL-4F-1010, BL2-FN-5F-1000 | 47d | 0d | Cash Flow [2279.46 h]; Plumber [12.67 h]; Excavation [12] | 2,279.46 | MEP | PL & D | 1st Fix | 1f |
| BL2-MEP-PL-5F-1020 |  | Supports installation for High level Pipes | 12d | 2015-05-27 | 2015-06-08 | BL2-MEP-PL-4F-1020, BL2-FN-5F-1000 | 78d | 10d | Cash Flow [819.68 h]; Plumber [16.35 h]; Excavation [12] | 819.68 | MEP | PL & D | 1st Fix | 1f |
|  | 3 | **2nd Fix** |  | 2015-07-04 | 2015-08-23 |  |  |  |  |  |  |  |  |  |
| BL2-MEP-PL-5F-2000 |  | High Level Water Supply Pipes and Fittings Installation | 21d | 2015-07-04 | 2015-07-24 | BL2-MEP-PL-5F-1020, BL2-MEP-PL-5F-1000, BL2-MEP-PL-4F-2000, BL2-FN-5F-1010 | 53d | 0d | Cash Flow [1308.6 h]; Plumber [150.02 h]; Excavation [21] | 1,308.6 | MEP | PL & D | 2nd Fix | 2f |
| BL2-MEP-PL-5F-2010 |  | High Level Drainage Pipes Installation | 21d | 2015-07-04 | 2015-07-24 | BL2-MEP-PL-5F-1020, BL2-MEP-PL-5F-1010, BL2-MEP-PL-4F-2010, BL2-FN-5F-1010 | 53d | 0d | Cash Flow [6562.53 h]; Plumber [244.38 h]; Excavation [21] | 6,562.53 | MEP | PL & D | 2nd Fix | 2f |
| BL2-MEP-PL-5F-2020 |  | Water Supply Pipes Pressure Test | 6d | 2015-07-25 | 2015-07-30 | BL2-MEP-PL-5F-2000, BL2-MEP-PL-5F-1000, BL2-MEP-PL-4F-2020 | 71d | 15d | Cash Flow [145.74 h]; Plumber [48 h]; Excavation [6] | 145.74 | MEP | PL & D | 2nd Fix | 2f |
| BL2-MEP-PL-5F-2030 |  | Floor Drain Installation | 6d | 2015-08-12 | 2015-08-17 | BL2-MEP-PL-4F-2030, BL2-FN-5F-1060 | 47d | 0d | Cash Flow [548.14 h]; Plumber [6 h]; Excavation [6] | 548.14 | MEP | PL & D | 1st Fix | 2f |
| BL2-MEP-PL-5F-2040 |  | Drainage Pipes Gravity Test | 6d | 2015-08-18 | 2015-08-23 | BL2-MEP-PL-5F-2010, BL2-MEP-PL-5F-1010, BL2-MEP-PL-5F-2030, BL2-MEP-PL-4F-2040 | 47d | 0d | Cash Flow [820.24 h]; Plumber [48 h]; Excavation [6] | 820.24 | MEP | PL & D | 2nd Fix | 2f |
|  | 4 | **Final Fix** |  | 2015-09-29 | 2015-10-18 |  |  |  |  |  |  |  |  |  |
| BL2-MEP-PL-5F-3000 |  | Sanitary Ware Installation Including Connection | 14d | 2015-09-29 | 2015-10-12 | BL2-MEP-PL-5F-2020, BL2-MEP-PL-5F-2040, BL2-MEP-PL-4F-3000, BL2-FN-5F-1050, BL2-FN-5F-1060, BL2-FN-5F-1050 FF, BL2-FN-5F-1070, BL2-FN-5F-1090 | 50d | 0d | Cash Flow [4439.52 h]; Plumber [383.86 h]; Excavation [14] | 4,439.52 | MEP | PL & D | Final F | ff |
| BL2-MEP-PL-5F-3010 |  | Sanitary Ware Accessories Installation | 6d | 2015-10-13 | 2015-10-18 | BL2-MEP-PL-5F-3000, BL2-MEP-PL-4F-3010 | 74d | 0d | Cash Flow [160.22 h]; Plumber [36.45 h]; Excavation [6] | 160.22 | MEP | PL & D | Final F | ff |

| ID | WBS | Activity | Duration | Start | Finish | Predecessors | Total float | Free float | Resources | Cost | Responsibility | MEP Systems | MEP Steps | Fix |
| --- | --- | --- | --- | --- | --- | --- | --- | --- | --- | --- | --- | --- | --- | --- |
|  | 3 | **Fire Fighting Works** |  | 2015-10-13 | 2015-10-18 |  |  |  |  |  |  |  |  |  |
|  | 4 | **Final Fix** |  | 2015-10-13 | 2015-10-18 |  |  |  |  |  |  |  |  |  |
| BL2-MEP-FF-5F-3010 |  | Hose reel Cabinet Installation and Connection | 6d | 2015-10-13 | 2015-10-18 | BL2-MEP-FF-4F-3010, BL2-FN-5F-1050, BL2-FN-5F-1070 | 99d | 0d | Cash Flow [1330.85 h]; Plumber [192 h]; Excavation [6] | 1,330.85 | MEP | FF | Final F | ff |
| BL2-MEP-FF-5F-3000 |  | Fire Extinguisher Installation | 2d | 2015-10-14 | 2015-10-15 | BL2-MEP-FF-4F-3000, BL2-FN-5F-1050, BL2-FN-5F-1100 SS+1d | 114d | 20d | Cash Flow [1074.99 h]; Plumber [8 h]; Excavation [2] | 1,074.99 | MEP | FF | Final F | ff |
|  | 3 | **Electrical System** |  | 2015-05-17 | 2015-09-22 |  |  |  |  |  |  |  |  |  |
|  | 1 | **1st Fix** |  | 2015-05-17 | 2015-06-02 |  |  |  |  |  |  |  |  |  |
| BL2-MEP-EL-5F-1000 |  | PVC Back Boxes and Conduits Fixing in Wall | 12d | 2015-05-17 | 2015-05-30 | BL2-MEP-EL-4F-1000, BL2-FN-5F-1000 SS+3d, BL2-FN-5F-1000 FF+3d | 48d | 9d | Cash Flow [3307.67 h]; Electrician [384 h]; Excavation [12] | 3,307.67 | MEP | EL | 1st Fix | 1f |
| BL2-MEP-EL-5F-1010 |  | DB's Inclosure Fixing | 6d | 2015-05-27 | 2015-06-02 | BL2-MEP-EL-4F-1010, BL2-FN-5F-1000 | 53d | 6d | Cash Flow [2130.4 h]; Electrician [96 h]; Excavation [6] | 2,130.4 | MEP | EL | 1st Fix | 1f |
|  | 2 | **2nd Fix** |  | 2015-06-28 | 2015-08-07 |  |  |  |  |  |  |  |  |  |
| BL2-MEP-EL-5F-2000 |  | Lighting Wiring | 12d | 2015-06-28 | 2015-07-09 | BL2-MEP-EL-5F-1000, BL2-MEP-EL-4F-2000, BL2-FN-5F-1010 | 92d | 10d | Cash Flow [3566.08 h]; Electrician [241.71 h]; Excavation [12] | 3,566.08 | MEP | EL | 2nd Fix | 2f |
| BL2-MEP-EL-5F-2010 |  | Power Points Wiring | 12d | 2015-06-28 | 2015-07-09 | BL2-MEP-EL-5F-1000, BL2-MEP-EL-4F-2010, BL2-FN-5F-1010 | 92d | 10d | Cash Flow [2894.21 h]; Electrician [192 h]; Excavation [12] | 2,894.21 | MEP | EL | 2nd Fix | 2f |
| BL2-MEP-EL-5F-2020 |  | Cable Tray and Trunking Installation | 14d | 2015-06-28 | 2015-07-11 | BL2-MEP-EL-4F-2020, BL2-FN-5F-1010 | 90d | 8d | Cash Flow [9064.45 h]; Electrician [336 h]; Excavation [14] | 9,064.45 | MEP | EL | 2nd Fix | 2f |
| BL2-MEP-EL-5F-2030 |  | Emergency Light Wiring | 8d | 2015-06-28 | 2015-07-05 | BL2-MEP-EL-5F-1000, BL2-MEP-EL-4F-2030, BL2-FN-5F-1010 | 96d | 14d | Cash Flow [1202.03 h]; Electrician [128 h]; Excavation [8] | 1,202.03 | MEP | EL | 2nd Fix | 2f |
| BL2-MEP-EL-5F-2040 |  | Fire Alarm System Wiring | 12d | 2015-06-28 | 2015-07-09 | BL2-MEP-EL-5F-1000, BL2-MEP-EL-4F-2040, BL2-FN-5F-1010 | 92d | 10d | Cash Flow [7111.01 h]; Electrician [192 h]; Excavation [12] | 7,111.01 | MEP | EL | 2nd Fix | 2f |
| BL2-MEP-EL-5F-2050 |  | Low Current System Wiring | 14d | 2015-06-28 | 2015-07-11 | BL2-MEP-EL-5F-1000, BL2-FN-5F-1010 | 189d | 49d | Cash Flow [38217.8 h]; Electrician [244 h]; Excavation [14] | 38,217.78 | MEP | EL |  | 2f |
| BL2-MEP-EL-5F-2060 |  | SMDB's Installation | 6d | 2015-07-13 | 2015-07-18 | BL2-MEP-EL-5F-1000, BL2-FN-5F-1020, BL2-MEP-EL-4F-2060 | 175d | 16d | Cash Flow [4196.6 h]; Electrician [45 h]; Excavation [6] | 4,196.6 | MEP | EL | 2nd Fix | 2f |
| BL2-MEP-EL-5F-2070 |  | DB's Installation and Termination | 12d | 2015-07-13 | 2015-07-24 | BL2-MEP-EL-5F-1010, BL2-MEP-EL-4F-2070, BL2-FN-5F-1020 | 77d | 0d | Cash Flow [4970.93 h]; Electrician [288 h]; Excavation [12] | 4,970.93 | MEP | EL | 2nd Fix | 2f |
| BL2-MEP-EL-5F-3000 |  | Power Cable Puling | 14d | 2015-07-25 | 2015-08-07 | BL2-MEP-EL-5F-2020, BL2-MEP-EL-5F-2000, BL2-MEP-EL-4F-3000, BL2-MEP-EL-5F-2070 | 123d | 8d | Cash Flow [6361.76 h]; Electrician [168 h]; Excavation [14] | 6,361.76 | MEP | EL | 2nd Fix | 2f |
|  | 3 | **Final Fix** |  | 2015-08-30 | 2015-09-22 |  |  |  |  |  |  |  |  |  |
| BL2-MEP-EL-5F-3010 |  | Lights Fitting Fixing | 14d | 2015-08-30 | 2015-09-12 | BL2-MEP-EL-5F-2000, BL2-FN-5F-1070, BL2-MEP-EL-4F-3010 | 101d | 8d | Cash Flow [7322.66 h]; Electrician [244 h]; Excavation [14] | 7,322.66 | MEP | EL | Final F | ff |
| BL2-MEP-EL-5F-3020 |  | Emergency Light Fixing | 8d | 2015-08-30 | 2015-09-06 | BL2-MEP-EL-5F-2030, BL2-FN-5F-1070, BL2-MEP-EL-4F-3020 | 138d | 14d | Cash Flow [5714.02 h]; Electrician [128 h]; Excavation [8] | 5,714.02 | MEP | EL | Final F | ff |
| BL2-MEP-EL-5F-3030 |  | Fire Alarm System Detector Installation | 12d | 2015-08-30 | 2015-09-10 | BL2-MEP-EL-5F-2040, BL2-FN-5F-1070, BL2-MEP-EL-4F-3030 | 111d | 10d | Cash Flow [4034.38 h]; Electrician [192 h]; Excavation [12] | 4,034.38 | MEP | EL | Final F | ff |
| BL2-MEP-EL-5F-3040 |  | Despature for Low Current System Installation | 14d | 2015-08-30 | 2015-09-12 | BL2-MEP-EL-5F-2050, BL2-FN-5F-1020, BL2-FN-5F-1070 | 140d | 0d | Cash Flow [72738.2 h]; Electrician [336 h]; Excavation [14] | 72,738.16 | MEP | EL |  | ff |
| BL2-MEP-EL-5F-3060 |  | SMDB's Termination and Final Connection | 6d | 2015-08-30 | 2015-09-04 | BL2-MEP-EL-5F-2060, BL2-MEP-EL-5F-2010, BL2-MEP-EL-4F-3070, BL2-MEP-EL-5F-3000, BL2-FN-5F-1070 | 133d | 16d | Cash Flow [2785.83 h]; Electrician [192 h]; Excavation [6] | 2,785.82 | MEP | EL | Final F | ff |
| BL2-MEP-EL-5F-3070 |  | Sockets and Switches Fixing | 8d | 2015-08-30 | 2015-09-06 | BL2-MEP-EL-5F-2010, BL2-FN-5F-1070, BL2-MEP-EL-4F-3060 | 131d | 14d | Cash Flow [1166.96 h]; Electrician [128 h]; Excavation [8] | 1,166.96 | MEP | EL | Final F | ff |
| BL2-MEP-EL-5F-3050 |  | Low Current System Outlet installation and Connection | 10d | 2015-09-13 | 2015-09-22 | BL2-MEP-EL-5F-2050, BL2-MEP-EL-5F-3040 | 140d | 26d | Cash Flow [3860.79 h]; Electrician [80 h]; Excavation [10] | 3,860.79 | MEP | EL |  | ff |

| ID | WBS | Activity | Duration | Start | Finish | Predecessors | Total float | Free float | Resources | Cost | Structural | Responsibility | MEP Systems | MEP Steps | Finishing | Fix |
| --- | --- | --- | --- | --- | --- | --- | --- | --- | --- | --- | --- | --- | --- | --- | --- | --- |
|  | 9 | **6th Floor** |  | 2015-03-12 | 2015-11-13 |  |  |  |  |  |  |  |  |  |  |  |
|  | 1 | **Structural** |  | 2015-03-12 | 2015-04-06 |  |  |  |  |  |  |  |  |  |  |  |
| BL2-ST-6F-1000 |  | Reinforcement for Verticals | 5d | 2015-03-12 | 2015-03-17 | ENG-STR-BL2-APP290, ENG-STR-BL2-APP300, BL2-ST-5F-1070 | 24d | 0d | MNHRS [842.2 h]; Cash Flow [56308.2 h]; Reinforcement [37996.5]; Excavation [5] | 56,308.21 | STR |  |  |  |  |  |
| BL2-ST-6F-1010 |  | MEP Works in Vertical Element | 5d | 2015-03-12 | 2015-03-17 | ENGMEP8650, BL2-ST-6F-1000 FF | 29d | 5d | Cash Flow [1798.55 h]; Electrician [160 h]; Excavation [5] | 1,798.55 |  | MEP | EL | B.W |  |  |
| BL2-ST-6F-1020 |  | FW for Verticals | 5d | 2015-03-18 | 2015-03-23 | BL2-ST-6F-1000 | 24d | 0d | MNHRS [9250.41 h]; Cash Flow [40668.8 h]; FW [1154.6]; Excavation [5] | 40,668.84 | STR |  |  |  |  |  |
| BL2-ST-6F-1030 |  | Concrete Verticals | 1d | 2015-03-24 | 2015-03-24 | BL2-ST-6F-1020, BL2-ST-6F-1010 | 24d | 0d | MNHRS [2003.27 h]; Cash Flow [33907.1 h]; Concrete [174]; Excavation [1] | 33,907.07 | STR |  |  |  |  |  |
| BL2-ST-6F-1040 |  | FW for Slab | 5d | 2015-03-25 | 2015-03-30 | BL2-ST-6F-1030 | 24d | 0d | MNHRS [16202.4 h]; Cash Flow [71232.8 h]; FW [1983]; Excavation [5] | 71,232.75 | STR |  |  |  |  |  |
| BL2-ST-6F-1050 |  | Reinforcement for Slab | 5d | 2015-03-31 | 2015-04-05 | BL2-ST-6F-1040 | 24d | 0d | MNHRS [1629.17 h]; Cash Flow [108924 h]; Reinforcement [81838]; Excavation [5] | 108,923.67 | STR |  |  |  |  |  |
| BL2-ST-6F-1060 |  | MEP Works in Slab & Beams | 5d | 2015-03-31 | 2015-04-05 | ENGMEP8650, BL2-ST-6F-1050 FF | 24d | 0d | Cash Flow [3349.02 h]; Electrician [320 h]; Excavation [5] | 3,349.02 |  | MEP | EL | B.W |  |  |
| BL2-ST-6F-1070 |  | Concrete for Slab | 1d | 2015-04-06 | 2015-04-06 | BL2-ST-6F-1050, BL2-ST-6F-1060 | 24d | 0d | MNHRS [4319.68 h]; Cash Flow [73114.5 h]; Concrete [442]; Excavation [1] | 73,114.49 | STR |  |  |  |  |  |
|  | 2 | **Fiishing** |  | 2015-05-28 | 2015-11-13 |  |  |  |  |  |  |  |  |  |  |  |
| BL2-FN-6F-1000 |  | Block Works | 21d | 2015-05-28 | 2015-06-18 | BL2-ST-7F-1070 FS+12d, BL2-ST-8F-1070 | 38d | 0d | Cash Flow [26499 h]; MNHRS [1993 h]; BW [520]; Excavation [21] | 26,498.96 |  |  |  |  | FIN |  |
| BL2-FN-6F-1010 |  | Plaster | 19d | 2015-07-01 | 2015-07-19 | BL2-FN-6F-1000, BL2-MEP-PL-6F-1000, BL2-MEP-PL-6F-1010, BL2-MEP-EL-6F-1000, BL2-MEP-EL-6F-1010 | 40d | 0d | MNHRS [3122 h]; Cash Flow [36698.9 h]; Plaster [1041]; Excavation [19] | 36,698.89 |  |  |  |  | FIN |  |
| BL2-FN-6F-1020 |  | Paint 1st Coat | 15d | 2015-07-20 | 2015-08-03 | BL2-FN-6F-1010 | 40d | 0d | MNHRS [312.2 h]; Cash Flow [5651.89 h]; Painting [1040.8]; Excavation [15] | 5,651.89 |  |  |  |  | FIN |  |
| BL2-FN-6F-1030 |  | Ceiling Paint | 10d | 2015-07-30 | 2015-08-08 | BL2-FN-6F-1020 SS+10d | 40d | 0d | MNHRS [29.34 h]; Cash Flow [177.03 h]; Painting [32.6]; Excavation [10] | 177.03 |  |  |  |  | FIN |  |
| BL2-FN-6F-1040 |  | Waterproofing | 5d | 2015-08-09 | 2015-08-13 | BL2-FN-6F-1030 | 40d | 0d | MNHRS [7 h]; Cash Flow [131.28 h]; Waterproofing [22.32]; Excavation [5] | 131.28 |  |  |  |  | FIN |  |
| BL2-FN-6F-1050 |  | Wall Tiling | 10d | 2015-08-09 | 2015-08-18 | BL2-FN-6F-1030 | 58d | 18d | MNHRS [1663.8 h]; Cash Flow [7382.46 h]; Tiling [167]; Excavation [10] | 7,382.46 |  |  |  |  | FIN |  |
| BL2-FN-6F-1060 |  | Flooring Works | 20d | 2015-08-14 | 2015-09-02 | BL2-FN-6F-1040 | 40d | 0d | MNHRS [1318 h]; Cash Flow [30728.5 h]; Tiling [200.7]; Excavation [20] | 30,728.51 |  |  |  |  | FIN |  |
| BL2-FN-6F-1070 |  | False Ceiling | 15d | 2015-09-06 | 2015-09-20 | BL2-FN-6F-1050, BL2-MEP-AC-6F-2070 FF+6d, BL2-MEP-PL-6F-2020 FF+6d, BL2-MEP-PL-6F-2040 FF+6d, BL2-MEP-AC-6F-2030 FF+6d, BL2-MEP-EL-6F-2030 FF+6d, BL2-MEP-EL-6F-2000 FF+6d, BL2-MEP-EL-6F-2010 FF+6d, BL2-MEP-EL-6F-2020 FF+6d, BL2-MEP-EL-6F-2040 FF+6d, BL2-MEP-EL-6F-2070 FF+6d | 40d | 0d | Cash Flow [54765 h]; False Ceiling [1267]; MNHRS [6335 h]; Excavation [15] | 54,765 |  |  |  |  | FIN |  |
| BL2-FN-6F-1080 |  | Hand Rails for Stairs | 15d | 2015-09-21 | 2015-10-05 | BL2-FN-6F-1070 | 40d | 0d | Cash Flow [9483.79 h]; Metal Works & Handrail [20]; MNHRS [43 h]; Excavation [15] | 9,483.79 |  |  |  |  | FIN |  |
| BL2-FN-6F-1090 |  | Doors Installation | 15d | 2015-10-06 | 2015-10-20 | BL2-FN-6F-1080, BL2-FN-5F-1090 | 40d | 0d | Cash Flow [25990.1 h]; Excavation [15] | 25,990.11 |  |  |  |  | FIN |  |
| BL2-FN-6F-1100 |  | Final Paint | 10d | 2015-11-04 | 2015-11-13 | BL2-FN-6F-1060, BL2-MEP-EL-6F-3060 FF+4d, BL2-MEP-EL-6F-3030 FF+4d, BL2-MEP-EL-6F-3020 FF+4d, BL2-MEP-EL-6F-3070 FF+4d, BL2-MEP-EL-6F-3000 FF+4d, BL2-MEP-PL-6F-3000 FF+4d, BL2-MEP-PL-6F-3010 FF+4d, BL2-MEP-FF-6F-3010 FF+4d, BL2-MEP-EL-6F-3050 FF+4d, BL2-MEP-EL-6F-3040 FF+4d | 94d | 0d | Excavation [10] |  |  |  |  |  | FIN |  |
|  | 10 | **MEP Work** |  | 2015-06-10 | 2015-11-09 |  |  |  |  |  |  |  |  |  |  |  |
|  | 1 | **Mechanical System** |  | 2015-06-19 | 2015-11-09 |  |  |  |  |  |  |  |  |  |  |  |
|  | 2 | **HVAC Works** |  | 2015-06-19 | 2015-10-02 |  |  |  |  |  |  |  |  |  |  |  |
|  | 1 | **1st Fix** |  | 2015-06-19 | 2015-06-30 |  |  |  |  |  |  |  |  |  |  |  |
| BL2-MEP-AC-6F-1000 |  | Supports and Hungers Fixing | 12d | 2015-06-19 | 2015-06-30 | BL2-MEP-AC-5F-1000, BL2-FN-6F-1000 | 68d | 10d | Cash Flow [326.47 h]; Ductman [192 h]; Excavation [12] | 326.47 |  | MEP | AC | 1st Fix |  | 1f |

| ID | WBS | Activity | Duration | Start | Finish | Predecessors | Total float | Free float | Resources | Cost | Responsibility | MEP Systems | MEP Steps | Fix |
| --- | --- | --- | --- | --- | --- | --- | --- | --- | --- | --- | --- | --- | --- | --- |
|  | 3 | **2nd Fix** |  | 2015-07-20 | 2015-09-01 |  |  |  |  |  |  |  |  |  |
| BL2-MEP-AC-6F-2010 |  | FCU's Installation | 8d | 2015-07-20 | 2015-07-27 | BL2-MEP-AC-6F-1000, BL2-MEP-AC-5F-2010, BL2-FN-6F-1010 | 80d | 14d | Cash Flow [5992.06 h]; Pipe Fitter - CHW [96 h]; Excavation [8] | 5,992.06 | MEP | AC | 2nd Fix | 2f |
| BL2-MEP-AC-6F-2000 |  | Duct Installation and Insulation | 21d | 2015-07-25 | 2015-08-14 | BL2-MEP-AC-6F-1000, BL2-MEP-AC-5F-2000, BL2-FN-6F-1010 | 45d | 0d | Cash Flow [4329.94 h]; Ductman [263 h]; Excavation [21] | 4,329.94 | MEP | AC | 2nd Fix | 2f |
| BL2-MEP-AC-6F-2020 |  | Chilled Water Pipes and Fittings Installation | 21d | 2015-07-25 | 2015-08-14 | BL2-MEP-AC-6F-1000, BL2-MEP-AC-5F-2020, BL2-FN-6F-1010 | 44d | 0d | Cash Flow [5230.19 h]; Pipe Fitter - CHW [420 h]; Excavation [21] | 5,230.19 | MEP | AC | 2nd Fix | 2f |
| BL2-MEP-AC-6F-2030 |  | Duct Accessories Installation | 14d | 2015-08-15 | 2015-08-28 | BL2-MEP-AC-6F-2000, BL2-MEP-AC-5F-2030 | 57d | 7d | Cash Flow [652.97 h]; Pipe Fitter - CHW [448 h]; Excavation [14] | 652.97 | MEP | AC | 2nd Fix | 2f |
| BL2-MEP-AC-6F-2040 |  | Chilled Water Pipes Pressure Test | 6d | 2015-08-15 | 2015-08-20 | BL2-MEP-AC-6F-2020 | 56d | 0d | Cash Flow [581.12 h]; Pipe Fitter - CHW [48 h]; Excavation [6] | 581.12 | MEP | AC | 2nd Fix | 2f |
| BL2-MEP-AC-6F-2050 |  | Chilled Water Pipes Insulation | 12d | 2015-08-21 | 2015-09-01 | BL2-MEP-AC-6F-2040, BL2-MEP-AC-5F-2050 | 122d | 9d | Cash Flow [1658.21 h]; Pipe Fitter - CHW [192 h]; Excavation [12] | 1,658.21 | MEP | AC | 2nd Fix | 2f |
| BL2-MEP-AC-6F-2060 |  | Valve Package Installation | 6d | 2015-08-21 | 2015-08-26 | BL2-MEP-AC-6F-2010, BL2-MEP-AC-6F-2040 | 56d | 0d | Cash Flow [2380.49 h]; Pipe Fitter - CHW [48 h]; Excavation [6] | 2,380.49 | MEP | AC | 2nd Fix | 2f |
| BL2-MEP-AC-6F-2070 |  | FCU's Drain Pipes Installation | 3d | 2015-08-27 | 2015-08-29 | BL2-MEP-AC-6F-2010, BL2-MEP-AC-6F-2060, BL2-MEP-AC-5F-2070 | 56d | 16d | Cash Flow [516.93 h]; Pipe Fitter - CHW [24 h]; Excavation [3] | 516.93 | MEP | AC | 2nd Fix | 2f |
|  | 4 | **Final Fix** |  | 2015-09-21 | 2015-10-02 |  |  |  |  |  |  |  |  |  |
| BL2-MEP-AC-6F-3000 |  | Grills and Diffusers Fixing | 12d | 2015-09-21 | 2015-10-02 | BL2-MEP-AC-6F-2030, BL2-MEP-AC-5F-3000, BL2-FN-6F-1070 | 109d | 10d | Cash Flow [11538.6 h]; Ductman [384 h]; Excavation [12] | 11,538.61 | MEP | AC | Final F | ff |
|  | 1 | **Plumbing and Drainage Works** |  | 2015-06-19 | 2015-11-09 |  |  |  |  |  |  |  |  |  |
|  | 1 | **1st Fix** |  | 2015-06-19 | 2015-06-30 |  |  |  |  |  |  |  |  |  |
| BL2-MEP-PL-6F-1000 |  | Low Level Water Supply Pipes Installation | 12d | 2015-06-19 | 2015-06-30 | BL2-MEP-PL-5F-1000, BL2-FN-6F-1000 | 40d | 0d | Cash Flow [713.22 h]; Plumber [42 h]; Excavation [12] | 713.22 | MEP | PL & D | 1st Fix | 1f |
| BL2-MEP-PL-6F-1010 |  | Low Level Drainage Pipes Installation | 12d | 2015-06-19 | 2015-06-30 | BL2-MEP-PL-5F-1010, BL2-FN-6F-1000 | 40d | 0d | Cash Flow [2279.46 h]; Plumber [12.67 h]; Excavation [12] | 2,279.46 | MEP | PL & D | 1st Fix | 1f |
| BL2-MEP-PL-6F-1020 |  | Supports installation for High level Pipes | 12d | 2015-06-19 | 2015-06-30 | BL2-MEP-PL-5F-1020, BL2-FN-6F-1000 | 77d | 10d | Cash Flow [819.68 h]; Plumber [16.35 h]; Excavation [12] | 819.68 | MEP | PL & D | 1st Fix | 1f |
|  | 3 | **2nd Fix** |  | 2015-07-25 | 2015-09-14 |  |  |  |  |  |  |  |  |  |
| BL2-MEP-PL-6F-2000 |  | High Level Water Supply Pipes and Fittings Installation | 21d | 2015-07-25 | 2015-08-14 | BL2-MEP-PL-6F-1020, BL2-MEP-PL-6F-1000, BL2-MEP-PL-5F-2000, BL2-FN-6F-1010 | 53d | 0d | Cash Flow [1308.6 h]; Plumber [150.02 h]; Excavation [21] | 1,308.6 | MEP | PL & D | 2nd Fix | 2f |
| BL2-MEP-PL-6F-2010 |  | High Level Drainage Pipes Installation | 21d | 2015-07-25 | 2015-08-14 | BL2-MEP-PL-6F-1020, BL2-MEP-PL-6F-1010, BL2-MEP-PL-5F-2010, BL2-FN-6F-1010 | 53d | 0d | Cash Flow [6562.53 h]; Plumber [244.38 h]; Excavation [21] | 6,562.53 | MEP | PL & D | 2nd Fix | 2f |
| BL2-MEP-PL-6F-2020 |  | Water Supply Pipes Pressure Test | 6d | 2015-08-15 | 2015-08-20 | BL2-MEP-PL-6F-2000, BL2-MEP-PL-6F-1000, BL2-MEP-PL-5F-2020 | 65d | 15d | Cash Flow [145.74 h]; Plumber [48 h]; Excavation [6] | 145.74 | MEP | PL & D | 2nd Fix | 2f |
| BL2-MEP-PL-6F-2030 |  | Floor Drain Installation | 6d | 2015-09-03 | 2015-09-08 | BL2-MEP-PL-5F-2030, BL2-FN-6F-1060 | 40d | 0d | Cash Flow [548.14 h]; Plumber [6 h]; Excavation [6] | 548.14 | MEP | PL & D | 1st Fix | 2f |
| BL2-MEP-PL-6F-2040 |  | Drainage Pipes Gravity Test | 6d | 2015-09-09 | 2015-09-14 | BL2-MEP-PL-6F-2010, BL2-MEP-PL-6F-1010, BL2-MEP-PL-6F-2030, BL2-MEP-PL-5F-2040 | 40d | 0d | Cash Flow [820.24 h]; Plumber [48 h]; Excavation [6] | 820.24 | MEP | PL & D | 2nd Fix | 2f |
|  | 4 | **Final Fix** |  | 2015-10-21 | 2015-11-09 |  |  |  |  |  |  |  |  |  |
| BL2-MEP-PL-6F-3000 |  | Sanitary Ware Installation Including Connection | 14d | 2015-10-21 | 2015-11-03 | BL2-MEP-PL-6F-2020, BL2-MEP-PL-6F-2040, BL2-MEP-PL-5F-3000, BL2-FN-6F-1060, BL2-FN-6F-1050, BL2-FN-6F-1070, BL2-FN-6F-1090 | 42d | 0d | Cash Flow [4439.52 h]; Plumber [383.86 h]; Excavation [14] | 4,439.52 | MEP | PL & D | Final F | ff |
| BL2-MEP-PL-6F-3010 |  | Sanitary Ware Accessories Installation | 6d | 2015-11-04 | 2015-11-09 | BL2-MEP-PL-6F-3000, BL2-MEP-PL-5F-3010 | 58d | 0d | Cash Flow [160.22 h]; Plumber [36.45 h]; Excavation [6] | 160.22 | MEP | PL & D | Final F | ff |

| ID | WBS | Activity | Duration | Start | Finish | Predecessors | Total float | Free float | Resources | Cost | Responsibility | MEP Systems | MEP Steps | Fix |
| --- | --- | --- | --- | --- | --- | --- | --- | --- | --- | --- | --- | --- | --- | --- |
|  | 3 | **Fire Fighting Works** |  | 2015-10-19 | 2015-11-06 |  |  |  |  |  |  |  |  |  |
|  | 4 | **Final Fix** |  | 2015-10-19 | 2015-11-06 |  |  |  |  |  |  |  |  |  |
| BL2-MEP-FF-6F-3010 |  | Hose reel Cabinet Installation and Connection | 6d | 2015-10-19 | 2015-10-24 | BL2-MEP-FF-5F-3010, BL2-FN-6F-1050, BL2-FN-6F-1070 | 99d | 0d | Cash Flow [1330.85 h]; Plumber [192 h]; Excavation [6] | 1,330.85 | MEP | FF | Final F | ff |
| BL2-MEP-FF-6F-3000 |  | Fire Extinguisher Installation | 2d | 2015-11-05 | 2015-11-06 | BL2-MEP-FF-5F-3000, BL2-FN-6F-1050, BL2-FN-6F-1100 SS+1d | 94d | 20d | Cash Flow [1074.99 h]; Plumber [8 h]; Excavation [2] | 1,074.99 | MEP | FF | Final F | ff |
|  | 3 | **Electrical System** |  | 2015-06-10 | 2015-10-14 |  |  |  |  |  |  |  |  |  |
|  | 1 | **1st Fix** |  | 2015-06-10 | 2015-06-24 |  |  |  |  |  |  |  |  |  |
| BL2-MEP-EL-6F-1000 |  | PVC Back Boxes and Conduits Fixing in Wall | 12d | 2015-06-10 | 2015-06-21 | BL2-MEP-EL-5F-1000, BL2-FN-6F-1000 SS+3d, BL2-FN-6F-1000 FF+3d | 38d | 9d | Cash Flow [3307.67 h]; Electrician [384 h]; Excavation [12] | 3,307.67 | MEP | EL | 1st Fix | 1f |
| BL2-MEP-EL-6F-1010 |  | DB's Inclosure Fixing | 6d | 2015-06-19 | 2015-06-24 | BL2-MEP-EL-5F-1010, BL2-FN-6F-1000 | 46d | 6d | Cash Flow [2130.4 h]; Electrician [96 h]; Excavation [6] | 2,130.4 | MEP | EL | 1st Fix | 1f |
|  | 2 | **2nd Fix** |  | 2015-07-20 | 2015-08-29 |  |  |  |  |  |  |  |  |  |
| BL2-MEP-EL-6F-2000 |  | Lighting Wiring | 12d | 2015-07-20 | 2015-07-31 | BL2-MEP-EL-6F-1000, BL2-MEP-EL-5F-2000, BL2-FN-6F-1010 | 85d | 10d | Cash Flow [3566.08 h]; Electrician [241.71 h]; Excavation [12] | 3,566.08 | MEP | EL | 2nd Fix | 2f |
| BL2-MEP-EL-6F-2010 |  | Power Points Wiring | 12d | 2015-07-20 | 2015-07-31 | BL2-MEP-EL-6F-1000, BL2-MEP-EL-5F-2010, BL2-FN-6F-1010 | 85d | 10d | Cash Flow [2894.21 h]; Electrician [192 h]; Excavation [12] | 2,894.21 | MEP | EL | 2nd Fix | 2f |
| BL2-MEP-EL-6F-2020 |  | Cable Tray and Trunking Installation | 14d | 2015-07-20 | 2015-08-02 | BL2-MEP-EL-5F-2020, BL2-FN-6F-1010 | 83d | 8d | Cash Flow [9064.45 h]; Electrician [336 h]; Excavation [14] | 9,064.45 | MEP | EL | 2nd Fix | 2f |
| BL2-MEP-EL-6F-2030 |  | Emergency Light Wiring | 8d | 2015-07-20 | 2015-07-27 | BL2-MEP-EL-6F-1000, BL2-MEP-EL-5F-2030, BL2-FN-6F-1010 | 89d | 14d | Cash Flow [1202.03 h]; Electrician [128 h]; Excavation [8] | 1,202.03 | MEP | EL | 2nd Fix | 2f |
| BL2-MEP-EL-6F-2040 |  | Fire Alarm System Wiring | 12d | 2015-07-20 | 2015-07-31 | BL2-MEP-EL-6F-1000, BL2-MEP-EL-5F-2040, BL2-FN-6F-1010 | 85d | 10d | Cash Flow [7111.01 h]; Electrician [192 h]; Excavation [12] | 7,111.01 | MEP | EL | 2nd Fix | 2f |
| BL2-MEP-EL-6F-2050 |  | Low Current System Wiring | 14d | 2015-07-20 | 2015-08-02 | BL2-MEP-EL-6F-1000, BL2-FN-6F-1010 | 169d | 49d | Cash Flow [38217.8 h]; Electrician [244 h]; Excavation [14] | 38,217.78 | MEP | EL |  | 2f |
| BL2-MEP-EL-6F-2060 |  | SMDB's Installation | 6d | 2015-08-04 | 2015-08-09 | BL2-MEP-EL-6F-1000, BL2-FN-6F-1020, BL2-MEP-EL-5F-2060 | 159d | 16d | Cash Flow [4196.6 h]; Electrician [45 h]; Excavation [6] | 4,196.6 | MEP | EL | 2nd Fix | 2f |
| BL2-MEP-EL-6F-2070 |  | DB's Installation and Termination | 12d | 2015-08-04 | 2015-08-15 | BL2-MEP-EL-6F-1010, BL2-MEP-EL-5F-2070, BL2-FN-6F-1020 | 70d | 0d | Cash Flow [4970.93 h]; Electrician [288 h]; Excavation [12] | 4,970.93 | MEP | EL | 2nd Fix | 2f |
| BL2-MEP-EL-6F-3010 |  | Power Cable Puling | 14d | 2015-08-16 | 2015-08-29 | BL2-MEP-EL-6F-2020, BL2-MEP-EL-6F-2000, BL2-MEP-EL-6F-2010, BL2-MEP-EL-5F-3000, BL2-MEP-EL-6F-2070 | 115d | 8d | Cash Flow [6361.76 h]; Electrician [168 h]; Excavation [14] | 6,361.76 | MEP | EL | 2nd Fix | 2f |
|  | 3 | **Final Fix** |  | 2015-09-21 | 2015-10-14 |  |  |  |  |  |  |  |  |  |
| BL2-MEP-EL-6F-3000 |  | Fire Alarm System Detector Installation | 12d | 2015-09-21 | 2015-10-02 | BL2-MEP-EL-6F-2040, BL2-FN-6F-1070, BL2-FN-6F-1060, BL2-MEP-EL-5F-3030 | 101d | 10d | Cash Flow [4034.38 h]; Electrician [192 h]; Excavation [12] | 4,034.38 | MEP | EL | Final F | ff |
| BL2-MEP-EL-6F-3020 |  | Lights Fitting Fixing | 14d | 2015-09-21 | 2015-10-04 | BL2-MEP-EL-6F-2000, BL2-FN-6F-1070, BL2-MEP-EL-5F-3010 | 93d | 8d | Cash Flow [7322.66 h]; Electrician [244 h]; Excavation [14] | 7,322.66 | MEP | EL | Final F | ff |
| BL2-MEP-EL-6F-3030 |  | Emergency Light Fixing | 8d | 2015-09-21 | 2015-09-28 | BL2-MEP-EL-6F-2030, BL2-FN-6F-1070, BL2-MEP-EL-5F-3020 | 124d | 14d | Cash Flow [5714.02 h]; Electrician [128 h]; Excavation [8] | 5,714.02 | MEP | EL | Final F | ff |
| BL2-MEP-EL-6F-3040 |  | Despature for Low Current System Installation | 14d | 2015-09-21 | 2015-10-04 | BL2-MEP-EL-6F-2050, BL2-FN-6F-1020, BL2-FN-6F-1070 | 120d | 0d | Cash Flow [72738.2 h]; Electrician [336 h]; Excavation [14] | 72,738.16 | MEP | EL |  | ff |
| BL2-MEP-EL-6F-3050 |  | SMDB's Termination and Final Connection | 6d | 2015-09-21 | 2015-09-26 | BL2-MEP-EL-6F-2060, BL2-MEP-EL-6F-2010, BL2-MEP-EL-5F-3060, BL2-MEP-EL-6F-3010, BL2-FN-6F-1070 | 117d | 16d | Cash Flow [2785.83 h]; Electrician [192 h]; Excavation [6] | 2,785.82 | MEP | EL | Final F | ff |
| BL2-MEP-EL-6F-3070 |  | Sockets and Switches Fixing | 8d | 2015-09-21 | 2015-09-28 | BL2-MEP-EL-6F-2010, BL2-FN-6F-1070, BL2-MEP-EL-5F-3070 | 117d | 14d | Cash Flow [1166.96 h]; Electrician [128 h]; Excavation [8] | 1,166.96 | MEP | EL | Final F | ff |
| BL2-MEP-EL-6F-3060 |  | Low Current System Outlet installation and Connection | 10d | 2015-10-05 | 2015-10-14 | BL2-MEP-EL-6F-2050, BL2-MEP-EL-6F-3040 | 120d | 26d | Cash Flow [3860.79 h]; Electrician [80 h]; Excavation [10] | 3,860.79 | MEP | EL |  | ff |

| ID | WBS | Activity | Duration | Start | Finish | Predecessors | Total float | Free float | Resources | Cost | Structural | Responsibility | MEP Systems | MEP Steps | Finishing | Fix |
| --- | --- | --- | --- | --- | --- | --- | --- | --- | --- | --- | --- | --- | --- | --- | --- | --- |
|  | 10 | **7th Floor** |  | 2015-04-07 | 2015-12-05 |  |  |  |  |  |  |  |  |  |  |  |
|  | 1 | **Structural** |  | 2015-04-07 | 2015-05-02 |  |  |  |  |  |  |  |  |  |  |  |
| BL2-ST-7F-1000 |  | Reinforcement for Verticals | 5d | 2015-04-07 | 2015-04-12 | ENG-STR-BL2-APP310, ENG-STR-BL2-APP320, BL2-ST-6F-1070 | 24d | 0d | MNHRS [842.2 h]; Cash Flow [56308.2 h]; Reinforcement [37996.5]; Excavation [5] | 56,308.21 | STR |  |  |  |  |  |
| BL2-ST-7F-1010 |  | MEP Works in Vertical Element | 5d | 2015-04-07 | 2015-04-12 | ENGMEP8650, BL2-ST-7F-1000 FF | 29d | 5d | Cash Flow [1798.55 h]; Electrician [160 h]; Excavation [5] | 1,798.55 |  | MEP | EL | B.W |  |  |
| BL2-ST-7F-1020 |  | FW for Verticals | 5d | 2015-04-13 | 2015-04-18 | BL2-ST-7F-1000 | 24d | 0d | MNHRS [9250.41 h]; Cash Flow [40668.8 h]; FW [1154.6]; Excavation [5] | 40,668.84 | STR |  |  |  |  |  |
| BL2-ST-7F-1030 |  | Concrete Verticals | 1d | 2015-04-19 | 2015-04-19 | BL2-ST-7F-1020, BL2-ST-7F-1010 | 24d | 0d | MNHRS [2003.27 h]; Cash Flow [33907.1 h]; Concrete [174]; Excavation [1] | 33,907.07 | STR |  |  |  |  |  |
| BL2-ST-7F-1040 |  | FW for Slab | 5d | 2015-04-20 | 2015-04-25 | BL2-ST-7F-1030 | 24d | 0d | MNHRS [16202.4 h]; Cash Flow [71232.8 h]; FW [1983]; Excavation [5] | 71,232.75 | STR |  |  |  |  |  |
| BL2-ST-7F-1050 |  | Reinforcement for Slab | 5d | 2015-04-26 | 2015-04-30 | BL2-ST-7F-1040 | 24d | 0d | MNHRS [1629.17 h]; Cash Flow [108924 h]; Reinforcement [81838]; Excavation [5] | 108,923.67 | STR |  |  |  |  |  |
| BL2-ST-7F-1060 |  | MEP Works in Slab & Beams | 5d | 2015-04-26 | 2015-04-30 | ENGMEP8650, BL2-ST-7F-1050 FF | 24d | 0d | Cash Flow [3349.02 h]; Electrician [320 h]; Excavation [5] | 3,349.02 |  | MEP | EL | B.W |  |  |
| BL2-ST-7F-1070 |  | Concrete for Slab | 1d | 2015-05-02 | 2015-05-02 | BL2-ST-7F-1050, BL2-ST-7F-1060 | 24d | 0d | MNHRS [4319.68 h]; Cash Flow [73114.5 h]; Concrete [442]; Excavation [1] | 73,114.49 | STR |  |  |  |  |  |
|  | 2 | **Fiishing** |  | 2015-06-20 | 2015-12-05 |  |  |  |  |  |  |  |  |  |  |  |
| BL2-FN-7F-1000 |  | Block Works | 21d | 2015-06-20 | 2015-07-10 | BL2-ST-8F-1070 FS+12d, BL2-ST-9F-1070 | 28d | 0d | Cash Flow [26499.3 h]; MNHRS [1993 h]; BW [520]; Excavation [21] | 26,499.3 |  |  |  |  | FIN |  |
| BL2-FN-7F-1010 |  | Plaster | 19d | 2015-07-23 | 2015-08-10 | BL2-FN-7F-1000, BL2-MEP-PL-7F-1010, BL2-MEP-PL-7F-1000, BL2-MEP-EL-7F-1010, BL2-MEP-EL-7F-1000 | 33d | 0d | MNHRS [3122 h]; Cash Flow [36698.9 h]; Plaster [1041]; Excavation [19] | 36,698.89 |  |  |  |  | FIN |  |
| BL2-FN-7F-1020 |  | Paint 1st Coat | 15d | 2015-08-11 | 2015-08-25 | BL2-FN-7F-1010 | 33d | 0d | MNHRS [312.2 h]; Cash Flow [5651.89 h]; Painting [1040.8]; Excavation [15] | 5,651.89 |  |  |  |  | FIN |  |
| BL2-FN-7F-1030 |  | Ceiling Paint | 10d | 2015-08-21 | 2015-08-30 | BL2-FN-7F-1020 SS+10d | 33d | 0d | MNHRS [29.34 h]; Cash Flow [177.03 h]; Painting [32.6]; Excavation [10] | 177.03 |  |  |  |  | FIN |  |
| BL2-FN-7F-1040 |  | Waterproofing | 5d | 2015-08-31 | 2015-09-04 | BL2-FN-7F-1030 | 33d | 0d | MNHRS [7 h]; Cash Flow [131.28 h]; Waterproofing [22.32]; Excavation [5] | 131.28 |  |  |  |  | FIN |  |
| BL2-FN-7F-1050 |  | Wall Tiling | 10d | 2015-08-31 | 2015-09-09 | BL2-FN-7F-1030 | 51d | 18d | MNHRS [1663.8 h]; Cash Flow [7382.46 h]; Tiling [167]; Excavation [10] | 7,382.46 |  |  |  |  | FIN |  |
| BL2-FN-7F-1060 |  | Flooring Works | 20d | 2015-09-05 | 2015-09-24 | BL2-FN-7F-1040 | 33d | 0d | MNHRS [1318 h]; Cash Flow [30728.5 h]; Tiling [200.7]; Excavation [20] | 30,728.51 |  |  |  |  | FIN |  |
| BL2-FN-7F-1070 |  | False Ceiling | 15d | 2015-09-28 | 2015-10-12 | BL2-FN-7F-1050, BL2-MEP-AC-7F-2070 FF+6d, BL2-MEP-PL-7F-2020 FF+6d, BL2-MEP-PL-7F-2040 FF+6d, BL2-MEP-AC-7F-2030 FF+6d, BL2-MEP-EL-7F-2030 FF+6d, BL2-MEP-EL-7F-2000 FF+6d, BL2-MEP-EL-7F-2010 FF+6d, BL2-MEP-EL-7F-2020 FF+6d, BL2-MEP-EL-7F-2040 FF+6d, BL2-MEP-EL-7F-2070 FF+6d | 33d | 0d | Cash Flow [54765 h]; False Ceiling [1267]; MNHRS [6335 h]; Excavation [15] | 54,765 |  |  |  |  | FIN |  |
| BL2-FN-7F-1080 |  | Hand Rails for Stairs | 15d | 2015-10-13 | 2015-10-27 | BL2-FN-7F-1070 | 33d | 0d | Cash Flow [9483.79 h]; Metal Works & Handrail [20]; MNHRS [43 h]; Excavation [15] | 9,483.79 |  |  |  |  | FIN |  |
| BL2-FN-7F-1090 |  | Doors Installation | 15d | 2015-10-28 | 2015-11-11 | BL2-FN-7F-1080, BL2-FN-6F-1090 | 33d | 0d | Cash Flow [25990.1 h]; Excavation [15] | 25,990.11 |  |  |  |  | FIN |  |
| BL2-FN-7F-1100 |  | Final Paint | 10d | 2015-11-26 | 2015-12-05 | BL2-FN-7F-1060, BL2-MEP-AC-7F-3000 FF+4d, BL2-MEP-EL-7F-3060 FF+4d, BL2-MEP-EL-7F-3040 FF+4d, BL2-MEP-EL-7F-3020 FF+4d, BL2-MEP-EL-7F-3030 FF+4d, BL2-MEP-EL-7F-3070 FF+4d, BL2-MEP-PL-7F-3000 FF+4d, BL2-MEP-PL-7F-3010 FF+4d, BL2-MEP-FF-7F-3010 FF+4d, BL2-MEP-EL-7F-3010 FF+4d, BL2-MEP-EL-7F-3050 FF+4d | 74d | 0d | Excavation [10] |  |  |  |  |  | FIN |  |
|  | 12 | **MEP Work** |  | 2015-07-02 | 2015-12-01 |  |  |  |  |  |  |  |  |  |  |  |
|  | 1 | **Mechanical System** |  | 2015-07-11 | 2015-12-01 |  |  |  |  |  |  |  |  |  |  |  |
|  | 2 | **HVAC Works** |  | 2015-07-11 | 2015-10-24 |  |  |  |  |  |  |  |  |  |  |  |
|  | 1 | **1st Fix** |  | 2015-07-11 | 2015-07-22 |  |  |  |  |  |  |  |  |  |  |  |
| BL2-MEP-AC-7F-1000 |  | Supports and Hungers Fixing | 12d | 2015-07-11 | 2015-07-22 | BL2-MEP-AC-6F-1000, BL2-FN-7F-1000 | 67d | 2d | Cash Flow [326.47 h]; Ductman [192 h]; Excavation [12] | 326.47 |  | MEP | AC | 1st Fix |  | 1f |

| ID | WBS | Activity | Duration | Start | Finish | Predecessors | Total float | Free float | Resources | Cost | Responsibility | MEP Systems | MEP Steps | Fix |
| --- | --- | --- | --- | --- | --- | --- | --- | --- | --- | --- | --- | --- | --- | --- |
|  | 3 | **2nd Fix** |  | 2015-08-11 | 2015-09-22 |  |  |  |  |  |  |  |  |  |
| BL2-MEP-AC-7F-2010 |  | FCU's Installation | 8d | 2015-08-11 | 2015-08-18 | BL2-MEP-AC-7F-1000, BL2-MEP-AC-6F-2010, BL2-FN-7F-1010 | 73d | 6d | Cash Flow [5992.06 h]; Pipe Fitter - CHW [96 h]; Excavation [8] | 5,992.06 | MEP | AC | 2nd Fix | 2f |
| BL2-MEP-AC-7F-2000 |  | Duct Installation and Insulation | 21d | 2015-08-15 | 2015-09-04 | BL2-MEP-AC-7F-1000, BL2-MEP-AC-6F-2000, BL2-FN-7F-1010 | 45d | 0d | Cash Flow [4329.94 h]; Ductman [263 h]; Excavation [21] | 4,329.94 | MEP | AC | 2nd Fix | 2f |
| BL2-MEP-AC-7F-2020 |  | Chilled Water Pipes and Fittings Installation | 21d | 2015-08-15 | 2015-09-04 | BL2-MEP-AC-7F-1000, BL2-MEP-AC-6F-2020, BL2-FN-7F-1010 | 44d | 0d | Cash Flow [5230.19 h]; Pipe Fitter - CHW [420 h]; Excavation [21] | 5,230.19 | MEP | AC | 2nd Fix | 2f |
| BL2-MEP-AC-7F-2030 |  | Duct Accessories Installation | 14d | 2015-09-05 | 2015-09-18 | BL2-MEP-AC-7F-2000, BL2-MEP-AC-6F-2030 | 51d | 7d | Cash Flow [652.97 h]; Pipe Fitter - CHW [448 h]; Excavation [14] | 652.97 | MEP | AC | 2nd Fix | 2f |
| BL2-MEP-AC-7F-2040 |  | Chilled Water Pipes Pressure Test | 6d | 2015-09-05 | 2015-09-10 | BL2-MEP-AC-7F-2020 | 50d | 0d | Cash Flow [581.12 h]; Pipe Fitter - CHW [48 h]; Excavation [6] | 581.12 | MEP | AC | 2nd Fix | 2f |
| BL2-MEP-AC-7F-2050 |  | Chilled Water Pipes Insulation | 12d | 2015-09-11 | 2015-09-22 | BL2-MEP-AC-7F-2040, BL2-MEP-AC-6F-2050 | 113d | 9d | Cash Flow [1658.21 h]; Pipe Fitter - CHW [192 h]; Excavation [12] | 1,658.21 | MEP | AC | 2nd Fix | 2f |
| BL2-MEP-AC-7F-2060 |  | Valve Package Installation | 6d | 2015-09-11 | 2015-09-16 | BL2-MEP-AC-7F-2010, BL2-MEP-AC-7F-2040 | 50d | 0d | Cash Flow [2380.49 h]; Pipe Fitter - CHW [48 h]; Excavation [6] | 2,380.49 | MEP | AC | 2nd Fix | 2f |
| BL2-MEP-AC-7F-2070 |  | FCU's Drain Pipes Installation | 3d | 2015-09-17 | 2015-09-19 | BL2-MEP-AC-7F-2010, BL2-MEP-AC-7F-2060, BL2-MEP-AC-6F-2070 | 50d | 17d | Cash Flow [516.93 h]; Pipe Fitter - CHW [24 h]; Excavation [3] | 516.93 | MEP | AC | 2nd Fix | 2f |
|  | 4 | **Final Fix** |  | 2015-10-13 | 2015-10-24 |  |  |  |  |  |  |  |  |  |
| BL2-MEP-AC-7F-3000 |  | Grills and Diffusers Fixing | 12d | 2015-10-13 | 2015-10-24 | BL2-MEP-AC-7F-2030, BL2-MEP-AC-7F-2000, BL2-MEP-AC-6F-3000, BL2-FN-7F-1070 | 99d | 2d | Cash Flow [11538.6 h]; Ductman [384 h]; Excavation [12] | 11,538.61 | MEP | AC | Final F | ff |
|  | 1 | **Plumbing and Drainage Works** |  | 2015-07-11 | 2015-12-01 |  |  |  |  |  |  |  |  |  |
|  | 1 | **1st Fix** |  | 2015-07-11 | 2015-07-22 |  |  |  |  |  |  |  |  |  |
| BL2-MEP-PL-7F-1000 |  | Low Level Water Supply Pipes Installation | 12d | 2015-07-11 | 2015-07-22 | BL2-MEP-PL-6F-1000, BL2-FN-7F-1000 | 33d | 0d | Cash Flow [713.22 h]; Plumber [42 h]; Excavation [12] | 713.22 | MEP | PL & D | 1st Fix | 1f |
| BL2-MEP-PL-7F-1010 |  | Low Level Drainage Pipes Installation | 12d | 2015-07-11 | 2015-07-22 | BL2-MEP-PL-6F-1010, BL2-FN-7F-1000 | 33d | 0d | Cash Flow [2279.46 h]; Plumber [12.67 h]; Excavation [12] | 2,279.46 | MEP | PL & D | 1st Fix | 1f |
| BL2-MEP-PL-7F-1020 |  | Supports installation for High level Pipes | 12d | 2015-07-11 | 2015-07-22 | BL2-MEP-PL-6F-1020, BL2-FN-7F-1000 | 76d | 2d | Cash Flow [819.68 h]; Plumber [16.35 h]; Excavation [12] | 819.68 | MEP | PL & D | 1st Fix | 1f |
|  | 3 | **2nd Fix** |  | 2015-08-15 | 2015-10-06 |  |  |  |  |  |  |  |  |  |
| BL2-MEP-PL-7F-2000 |  | High Level Water Supply Pipes and Fittings Installation | 21d | 2015-08-15 | 2015-09-04 | BL2-MEP-PL-7F-1020, BL2-MEP-PL-7F-1000, BL2-MEP-PL-6F-2000, BL2-FN-7F-1010 | 53d | 0d | Cash Flow [1308.6 h]; Plumber [150.02 h]; Excavation [21] | 1,308.6 | MEP | PL & D | 2nd Fix | 2f |
| BL2-MEP-PL-7F-2010 |  | High Level Drainage Pipes Installation | 21d | 2015-08-15 | 2015-09-04 | BL2-MEP-PL-7F-1020, BL2-MEP-PL-7F-1010, BL2-MEP-PL-6F-2010, BL2-FN-7F-1010 | 53d | 0d | Cash Flow [6562.53 h]; Plumber [244.38 h]; Excavation [21] | 6,562.53 | MEP | PL & D | 2nd Fix | 2f |
| BL2-MEP-PL-7F-2020 |  | Water Supply Pipes Pressure Test | 6d | 2015-09-05 | 2015-09-10 | BL2-MEP-PL-7F-2000, BL2-MEP-PL-7F-1000, BL2-MEP-PL-6F-2020 | 59d | 15d | Cash Flow [145.74 h]; Plumber [48 h]; Excavation [6] | 145.74 | MEP | PL & D | 2nd Fix | 2f |
| BL2-MEP-PL-7F-2030 |  | Floor Drain Installation | 6d | 2015-09-25 | 2015-09-30 | BL2-MEP-PL-6F-2030, BL2-FN-7F-1060 | 33d | 0d | Cash Flow [548.14 h]; Plumber [6 h]; Excavation [6] | 548.14 | MEP | PL & D | 1st Fix | 2f |
| BL2-MEP-PL-7F-2040 |  | Drainage Pipes Gravity Test | 6d | 2015-10-01 | 2015-10-06 | BL2-MEP-PL-7F-2010, BL2-MEP-PL-7F-1010, BL2-MEP-PL-7F-2030, BL2-MEP-PL-6F-2040 | 33d | 0d | Cash Flow [820.24 h]; Plumber [48 h]; Excavation [6] | 820.24 | MEP | PL & D | 2nd Fix | 2f |
|  | 4 | **Final Fix** |  | 2015-11-12 | 2015-12-01 |  |  |  |  |  |  |  |  |  |
| BL2-MEP-PL-7F-3000 |  | Sanitary Ware Installation Including Connection | 14d | 2015-11-12 | 2015-11-25 | BL2-MEP-PL-7F-2020, BL2-MEP-PL-7F-2040, BL2-MEP-PL-6F-3000, BL2-FN-7F-1060, BL2-FN-7F-1050, BL2-FN-7F-1070, BL2-FN-7F-1090 | 34d | 0d | Cash Flow [4439.52 h]; Plumber [383.86 h]; Excavation [14] | 4,439.52 | MEP | PL & D | Final F | ff |
| BL2-MEP-PL-7F-3010 |  | Sanitary Ware Accessories Installation | 6d | 2015-11-26 | 2015-12-01 | BL2-MEP-PL-7F-3000, BL2-MEP-PL-6F-3010 | 42d | 0d | Cash Flow [160.22 h]; Plumber [36.45 h]; Excavation [6] | 160.22 | MEP | PL & D | Final F | ff |

| ID | WBS | Activity | Duration | Start | Finish | Predecessors | Total float | Free float | Resources | Cost | Responsibility | MEP Systems | MEP Steps | Fix |
| --- | --- | --- | --- | --- | --- | --- | --- | --- | --- | --- | --- | --- | --- | --- |
|  | 3 | **Fire Fighting Works** |  | 2015-10-25 | 2015-11-28 |  |  |  |  |  |  |  |  |  |
|  | 4 | **Final Fix** |  | 2015-10-25 | 2015-11-28 |  |  |  |  |  |  |  |  |  |
| BL2-MEP-FF-7F-3010 |  | Hose reel Cabinet Installation and Connection | 6d | 2015-10-25 | 2015-10-30 | BL2-MEP-FF-6F-3010, BL2-FN-7F-1050, BL2-FN-7F-1070 | 99d | 0d | Cash Flow [1330.85 h]; Plumber [192 h]; Excavation [6] | 1,330.85 | MEP | FF | Final F | ff |
| BL2-MEP-FF-7F-3000 |  | Fire Extinguisher Installation | 2d | 2015-11-27 | 2015-11-28 | BL2-MEP-FF-6F-3000, BL2-FN-7F-1050, BL2-FN-7F-1100 SS+1d | 74d | 13d | Cash Flow [1074.99 h]; Plumber [8 h]; Excavation [2] | 1,074.99 | MEP | FF | Final F | ff |
|  | 3 | **Electrical System** |  | 2015-07-02 | 2015-11-05 |  |  |  |  |  |  |  |  |  |
|  | 1 | **1st Fix** |  | 2015-07-02 | 2015-07-16 |  |  |  |  |  |  |  |  |  |
| BL2-MEP-EL-7F-1000 |  | PVC Back Boxes and Conduits Fixing in Wall | 12d | 2015-07-02 | 2015-07-13 | BL2-MEP-EL-6F-1000, BL2-FN-7F-1000 SS+3d, BL2-FN-7F-1000 FF+3d | 28d | 2d | Cash Flow [3307.67 h]; Electrician [384 h]; Excavation [12] | 3,307.67 | MEP | EL | 1st Fix | 1f |
| BL2-MEP-EL-7F-1010 |  | DB's Inclosure Fixing | 6d | 2015-07-11 | 2015-07-16 | BL2-MEP-EL-6F-1010, BL2-FN-7F-1000 | 39d | 6d | Cash Flow [2130.4 h]; Electrician [96 h]; Excavation [6] | 2,130.4 | MEP | EL | 1st Fix | 1f |
|  | 2 | **2nd Fix** |  | 2015-08-11 | 2015-09-20 |  |  |  |  |  |  |  |  |  |
| BL2-MEP-EL-7F-2000 |  | Lighting Wiring | 12d | 2015-08-11 | 2015-08-22 | BL2-MEP-EL-7F-1000, BL2-MEP-EL-6F-2000, BL2-FN-7F-1010 | 78d | 2d | Cash Flow [3566.08 h]; Electrician [241.71 h]; Excavation [12] | 3,566.08 | MEP | EL | 2nd Fix | 2f |
| BL2-MEP-EL-7F-2010 |  | Power Points Wiring | 12d | 2015-08-11 | 2015-08-22 | BL2-MEP-EL-7F-1000, BL2-MEP-EL-6F-2010, BL2-FN-7F-1010 | 78d | 2d | Cash Flow [2894.21 h]; Electrician [192 h]; Excavation [12] | 2,894.21 | MEP | EL | 2nd Fix | 2f |
| BL2-MEP-EL-7F-2020 |  | Cable Tray and Trunking Installation | 14d | 2015-08-11 | 2015-08-24 | BL2-MEP-EL-6F-2020, BL2-FN-7F-1010 | 76d | 0d | Cash Flow [9064.45 h]; Electrician [336 h]; Excavation [14] | 9,064.45 | MEP | EL | 2nd Fix | 2f |
| BL2-MEP-EL-7F-2030 |  | Emergency Light Wiring | 8d | 2015-08-11 | 2015-08-18 | BL2-MEP-EL-7F-1000, BL2-MEP-EL-6F-2030, BL2-FN-7F-1010 | 82d | 6d | Cash Flow [1202.03 h]; Electrician [128 h]; Excavation [8] | 1,202.03 | MEP | EL | 2nd Fix | 2f |
| BL2-MEP-EL-7F-2040 |  | Fire Alarm System Wiring | 12d | 2015-08-11 | 2015-08-22 | BL2-MEP-EL-7F-1000, BL2-MEP-EL-6F-2040, BL2-FN-7F-1010 | 78d | 2d | Cash Flow [7111.01 h]; Electrician [192 h]; Excavation [12] | 7,111.01 | MEP | EL | 2nd Fix | 2f |
| BL2-MEP-EL-7F-2050 |  | Low Current System Wiring | 14d | 2015-08-11 | 2015-08-24 | BL2-MEP-EL-7F-1000, BL2-FN-7F-1010 | 149d | 49d | Cash Flow [38217.8 h]; Electrician [244 h]; Excavation [14] | 38,217.78 | MEP | EL |  | 2f |
| BL2-MEP-EL-7F-2060 |  | SMDB's Installation | 6d | 2015-08-26 | 2015-08-31 | BL2-MEP-EL-7F-1000, BL2-FN-7F-1020, BL2-MEP-EL-6F-2060 | 143d | 8d | Cash Flow [4196.6 h]; Electrician [45 h]; Excavation [6] | 4,196.6 | MEP | EL | 2nd Fix | 2f |
| BL2-MEP-EL-7F-2070 |  | DB's Installation and Termination | 12d | 2015-08-26 | 2015-09-06 | BL2-MEP-EL-7F-1010, BL2-MEP-EL-6F-2070, BL2-FN-7F-1020 | 63d | 0d | Cash Flow [4970.93 h]; Electrician [288 h]; Excavation [12] | 4,970.93 | MEP | EL | 2nd Fix | 2f |
| BL2-MEP-EL-7F-3000 |  | Power Cable Puling | 14d | 2015-09-07 | 2015-09-20 | BL2-MEP-EL-7F-2020, BL2-MEP-EL-7F-2000, BL2-MEP-EL-7F-2010, BL2-MEP-EL-6F-3010, BL2-MEP-EL-7F-2070 | 107d | 0d | Cash Flow [6361.76 h]; Electrician [168 h]; Excavation [14] | 6,361.76 | MEP | EL | 2nd Fix | 2f |
|  | 3 | **Final Fix** |  | 2015-10-13 | 2015-11-05 |  |  |  |  |  |  |  |  |  |
| BL2-MEP-EL-7F-3010 |  | SMDB's Termination and Final Connection | 6d | 2015-10-13 | 2015-10-18 | BL2-MEP-EL-7F-2060, BL2-MEP-EL-7F-2010, BL2-MEP-EL-6F-3050, BL2-MEP-EL-7F-3000, BL2-FN-7F-1070 | 101d | 8d | Cash Flow [2785.83 h]; Electrician [192 h]; Excavation [6] | 2,785.82 | MEP | EL | Final F | ff |
| BL2-MEP-EL-7F-3020 |  | Lights Fitting Fixing | 14d | 2015-10-13 | 2015-10-26 | BL2-MEP-EL-7F-2000, BL2-FN-7F-1070, BL2-MEP-EL-6F-3020 | 85d | 0d | Cash Flow [7322.66 h]; Electrician [244 h]; Excavation [14] | 7,322.66 | MEP | EL | Final F | ff |
| BL2-MEP-EL-7F-3030 |  | Emergency Light Fixing | 8d | 2015-10-13 | 2015-10-20 | BL2-MEP-EL-7F-2030, BL2-FN-7F-1070, BL2-MEP-EL-6F-3030 | 110d | 6d | Cash Flow [5714.02 h]; Electrician [128 h]; Excavation [8] | 5,714.02 | MEP | EL | Final F | ff |
| BL2-MEP-EL-7F-3040 |  | Fire Alarm System Detector Installation | 12d | 2015-10-13 | 2015-10-24 | BL2-MEP-EL-7F-2040, BL2-FN-7F-1070, BL2-MEP-EL-6F-3000 | 91d | 2d | Cash Flow [4034.38 h]; Electrician [192 h]; Excavation [12] | 4,034.38 | MEP | EL | Final F | ff |
| BL2-MEP-EL-7F-3050 |  | Despature for Low Current System Installation | 14d | 2015-10-13 | 2015-10-26 | BL2-MEP-EL-7F-2050, BL2-FN-7F-1020, BL2-FN-7F-1070 | 100d | 0d | Cash Flow [72738.2 h]; Electrician [336 h]; Excavation [14] | 72,738.16 | MEP | EL |  | ff |
| BL2-MEP-EL-7F-3070 |  | Sockets and Switches Fixing | 8d | 2015-10-13 | 2015-10-20 | BL2-MEP-EL-7F-2010, BL2-FN-7F-1070, BL2-MEP-EL-6F-3070 | 103d | 6d | Cash Flow [1166.96 h]; Electrician [128 h]; Excavation [8] | 1,166.96 | MEP | EL | Final F | ff |
| BL2-MEP-EL-7F-3060 |  | Low Current System Outlet installation and Connection | 10d | 2015-10-27 | 2015-11-05 | BL2-MEP-EL-7F-2050, BL2-MEP-EL-7F-3050 | 100d | 26d | Cash Flow [3860.79 h]; Electrician [80 h]; Excavation [10] | 3,860.79 | MEP | EL |  | ff |

| ID | WBS | Activity | Duration | Start | Finish | Predecessors | Total float | Free float | Resources | Cost | Structural | Responsibility | MEP Systems | MEP Steps | Finishing | Fix |
| --- | --- | --- | --- | --- | --- | --- | --- | --- | --- | --- | --- | --- | --- | --- | --- | --- |
|  | 11 | **8th Floor** |  | 2015-05-03 | 2015-12-20 |  |  |  |  |  |  |  |  |  |  |  |
|  | 1 | **Structural** |  | 2015-05-03 | 2015-05-27 |  |  |  |  |  |  |  |  |  |  |  |
| BL2-ST-8F-1000 |  | Reinforcement for Verticals | 5d | 2015-05-03 | 2015-05-07 | ENG-STR-BL2-APP330, ENG-STR-BL2-APP340, BL2-ST-7F-1070 | 24d | 0d | MNHRS [842.2 h]; Cash Flow [56308.2 h]; Reinforcement [37996.5]; Excavation [5] | 56,308.21 | STR |  |  |  |  |  |
| BL2-ST-8F-1010 |  | MEP Works in Vertical Element | 5d | 2015-05-03 | 2015-05-07 | ENGMEP8650, BL2-ST-8F-1000 FF | 29d | 5d | Cash Flow [1798.55 h]; Electrician [160 h]; Excavation [5] | 1,798.55 |  | MEP | EL | B.W |  |  |
| BL2-ST-8F-1020 |  | FW for Verticals | 5d | 2015-05-09 | 2015-05-13 | BL2-ST-8F-1000 | 24d | 0d | MNHRS [9250.41 h]; Cash Flow [40668.8 h]; FW [1154.6]; Excavation [5] | 40,668.84 | STR |  |  |  |  |  |
| BL2-ST-8F-1030 |  | Concrete Verticals | 1d | 2015-05-14 | 2015-05-14 | BL2-ST-8F-1020, BL2-ST-8F-1010 | 24d | 0d | MNHRS [2003.27 h]; Cash Flow [33907.1 h]; Concrete [174]; Excavation [1] | 33,907.07 | STR |  |  |  |  |  |
| BL2-ST-8F-1040 |  | FW for Slab | 5d | 2015-05-16 | 2015-05-20 | BL2-ST-8F-1030 | 24d | 0d | MNHRS [16202.4 h]; Cash Flow [71232.8 h]; FW [1983]; Excavation [5] | 71,232.75 | STR |  |  |  |  |  |
| BL2-ST-8F-1050 |  | Reinforcement for Slab | 5d | 2015-05-21 | 2015-05-26 | BL2-ST-8F-1040 | 24d | 0d | MNHRS [1629.17 h]; Cash Flow [108924 h]; Reinforcement [81838]; Excavation [5] | 108,923.67 | STR |  |  |  |  |  |
| BL2-ST-8F-1060 |  | MEP Works in Slab & Beams | 5d | 2015-05-21 | 2015-05-26 | ENGMEP8650, BL2-ST-8F-1050 FF | 24d | 0d | Cash Flow [3349.02 h]; Electrician [320 h]; Excavation [5] | 3,349.02 |  | MEP | EL | B.W |  |  |
| BL2-ST-8F-1070 |  | Concrete for Slab | 1d | 2015-05-27 | 2015-05-27 | BL2-ST-8F-1050, BL2-ST-8F-1060 | 24d | 0d | MNHRS [4319.68 h]; Cash Flow [73114.5 h]; Concrete [442]; Excavation [1] | 73,114.49 | STR |  |  |  |  |  |
|  | 2 | **Fiishing** |  | 2015-07-04 | 2015-12-20 |  |  |  |  |  |  |  |  |  |  |  |
| BL2-FN-8F-1000 |  | Block Works | 21d | 2015-07-04 | 2015-07-24 | BL2-ST-9F-1070 FS+14d | 26d | 0d | Cash Flow [26499 h]; MNHRS [1993 h]; BW [520]; Excavation [21] | 26,498.96 |  |  |  |  | FIN |  |
| BL2-FN-8F-1010 |  | Plaster | 19d | 2015-08-06 | 2015-08-24 | BL2-FN-8F-1000, BL2-MEP-EL-8F-1000, BL2-MEP-EL-8F-1010, BL2-MEP-PL-8F-1000, BL2-MEP-PL-8F-1010 | 34d | 0d | MNHRS [3122 h]; Cash Flow [36698.9 h]; Plaster [1041]; Excavation [19] | 36,698.89 |  |  |  |  | FIN |  |
| BL2-FN-8F-1020 |  | Paint 1st Coat | 15d | 2015-08-25 | 2015-09-08 | BL2-FN-8F-1010 | 34d | 0d | MNHRS [312.2 h]; Cash Flow [5651.89 h]; Painting [1040.8]; Excavation [15] | 5,651.89 |  |  |  |  | FIN |  |
| BL2-FN-8F-1030 |  | Ceiling Paint | 10d | 2015-09-04 | 2015-09-13 | BL2-FN-8F-1020 SS+10d | 34d | 0d | MNHRS [78 h]; Cash Flow [470 h]; Painting [87]; Excavation [10] | 470 |  |  |  |  | FIN |  |
| BL2-FN-8F-1040 |  | Waterproofing | 5d | 2015-09-14 | 2015-09-18 | BL2-FN-8F-1030 | 34d | 0d | MNHRS [56 h]; Cash Flow [424 h]; Waterproofing [76]; Excavation [5] | 424 |  |  |  |  | FIN |  |
| BL2-FN-8F-1050 |  | Wall Tiling | 10d | 2015-09-14 | 2015-09-23 | BL2-FN-8F-1030 | 52d | 18d | MNHRS [1663.8 h]; Cash Flow [7382.46 h]; Tiling [167]; Excavation [10] | 7,382.46 |  |  |  |  | FIN |  |
| BL2-FN-8F-1060 |  | Flooring Works | 20d | 2015-09-19 | 2015-10-08 | BL2-FN-8F-1040 | 34d | 0d | MNHRS [1318 h]; Cash Flow [30728.5 h]; Tiling [200.7]; Excavation [20] | 30,728.51 |  |  |  |  | FIN |  |
| BL2-FN-8F-1070 |  | False Ceiling | 15d | 2015-10-12 | 2015-10-26 | BL2-FN-8F-1050, BL2-MEP-AC-8F-2070 FF+6d, BL2-MEP-PL-8F-2020 FF+6d, BL2-MEP-PL-8F-2040 FF+6d, BL2-MEP-AC-8F-2030 FF+6d, BL2-MEP-EL-8F-2000 FF+6d, BL2-MEP-EL-8F-2020 FF+6d, BL2-MEP-EL-8F-2030 FF+6d, BL2-MEP-EL-8F-2050 FF+6d, BL2-MEP-EL-8F-2040 FF+6d, BL2-MEP-EL-8F-2070 FF+6d | 34d | 0d | Cash Flow [54765 h]; False Ceiling [1334]; MNHRS [6670 h]; Excavation [15] | 54,765 |  |  |  |  | FIN |  |
| BL2-FN-8F-1080 |  | Hand Rails for Stairs | 15d | 2015-10-27 | 2015-11-10 | BL2-FN-8F-1070 | 34d | 1d | Cash Flow [9483.79 h]; Metal Works & Handrail [20]; MNHRS [43 h]; Excavation [15] | 9,483.79 |  |  |  |  | FIN |  |
| BL2-FN-8F-1090 |  | Doors Installation | 15d | 2015-11-12 | 2015-11-26 | BL2-FN-8F-1080, BL2-FN-7F-1090 | 33d | 0d | Cash Flow [25990.1 h]; Excavation [15] | 25,990.11 |  |  |  |  | FIN |  |
| BL2-FN-8F-1100 |  | Final Paint | 10d | 2015-12-11 | 2015-12-20 | BL2-FN-8F-1060, BL2-MEP-AC-8F-3000 FF+4d, BL2-MEP-EL-8F-3060 FF+4d, BL2-MEP-EL-8F-3040 FF+4d, BL2-MEP-EL-8F-3020 FF+4d, BL2-MEP-EL-8F-3030 FF+4d, BL2-MEP-EL-8F-3070 FF+4d, BL2-MEP-PL-8F-3000 FF+4d, BL2-MEP-PL-8F-3010 FF+4d, BL2-MEP-FF-8F-3010 FF+4d, BL2-MEP-EL-8F-3010 FF+4d, BL2-MEP-EL-8F-3050 FF+4d | 61d | 0d | Excavation [10] |  |  |  |  |  | FIN |  |
|  | 13 | **MEP Work** |  | 2015-07-16 | 2015-12-16 |  |  |  |  |  |  |  |  |  |  |  |
|  | 1 | **Mechanical System** |  | 2015-07-25 | 2015-12-16 |  |  |  |  |  |  |  |  |  |  |  |
|  | 2 | **HVAC Works** |  | 2015-07-25 | 2015-11-07 |  |  |  |  |  |  |  |  |  |  |  |
|  | 1 | **1st Fix** |  | 2015-07-25 | 2015-08-05 |  |  |  |  |  |  |  |  |  |  |  |
| BL2-MEP-AC-8F-1000 |  | Supports and Hungers Fixing | 12d | 2015-07-25 | 2015-08-05 | BL2-MEP-AC-7F-1000, BL2-FN-8F-1000 | 74d | 19d | Cash Flow [326.47 h]; Ductman [192 h]; Excavation [12] | 326.47 |  | MEP | AC | 1st Fix |  | 1f |

| ID | WBS | Activity | Duration | Start | Finish | Predecessors | Total float | Free float | Resources | Cost | Responsibility | MEP Systems | MEP Steps | Fix |
| --- | --- | --- | --- | --- | --- | --- | --- | --- | --- | --- | --- | --- | --- | --- |
|  | 3 | **2nd Fix** |  | 2015-08-25 | 2015-10-13 |  |  |  |  |  |  |  |  |  |
| BL2-MEP-AC-8F-2000 |  | FCU's Installation | 8d | 2015-08-25 | 2015-09-01 | BL2-MEP-AC-8F-1000, BL2-MEP-AC-7F-2010, BL2-MEP-AC-7F-2010 FF, BL2-FN-8F-1010 | 74d | 30d | Cash Flow [5992.06 h]; Pipe Fitter - CHW [96 h]; Excavation [8] | 5,992.06 | MEP | AC | 2nd Fix | 2f |
| BL2-MEP-AC-8F-2010 |  | Duct Installation and Insulation | 21d | 2015-09-05 | 2015-09-25 | BL2-MEP-AC-8F-1000, BL2-MEP-AC-7F-2000, BL2-FN-8F-1010 | 45d | 0d | Cash Flow [4329.94 h]; Ductman [263 h]; Excavation [21] | 4,329.94 | MEP | AC | 2nd Fix | 2f |
| BL2-MEP-AC-8F-2020 |  | Chilled Water Pipes and Fittings Installation | 21d | 2015-09-05 | 2015-09-25 | BL2-MEP-AC-8F-1000, BL2-MEP-AC-7F-2020, BL2-FN-8F-1010 | 44d | 0d | Cash Flow [5230.19 h]; Pipe Fitter - CHW [420 h]; Excavation [21] | 5,230.19 | MEP | AC | 2nd Fix | 2f |
| BL2-MEP-AC-8F-2030 |  | Duct Accessories Installation | 14d | 2015-09-26 | 2015-10-09 | BL2-MEP-AC-8F-2010, BL2-MEP-AC-7F-2030 | 45d | 11d | Cash Flow [652.97 h]; Pipe Fitter - CHW [448 h]; Excavation [14] | 652.97 | MEP | AC | 2nd Fix | 2f |
| BL2-MEP-AC-8F-2040 |  | Chilled Water Pipes Pressure Test | 6d | 2015-09-26 | 2015-10-01 | BL2-MEP-AC-8F-2020 | 44d | 0d | Cash Flow [581.12 h]; Pipe Fitter - CHW [48 h]; Excavation [6] | 581.12 | MEP | AC | 2nd Fix | 2f |
| BL2-MEP-AC-8F-2050 |  | Chilled Water Pipes Insulation | 12d | 2015-10-02 | 2015-10-13 | BL2-MEP-AC-8F-2040, BL2-MEP-AC-7F-2050 | 104d | 55d | Cash Flow [1658.21 h]; Pipe Fitter - CHW [192 h]; Excavation [12] | 1,658.21 | MEP | AC | 2nd Fix | 2f |
| BL2-MEP-AC-8F-2060 |  | Valve Package Installation | 6d | 2015-10-02 | 2015-10-07 | BL2-MEP-AC-8F-2000, BL2-MEP-AC-8F-2040 | 44d | 0d | Cash Flow [2380.49 h]; Pipe Fitter - CHW [48 h]; Excavation [6] | 2,380.49 | MEP | AC | 2nd Fix | 2f |
| BL2-MEP-AC-8F-2070 |  | FCU's Drain Pipes Installation | 3d | 2015-10-08 | 2015-10-10 | BL2-MEP-AC-8F-2000, BL2-MEP-AC-8F-2060, BL2-MEP-AC-7F-2070 | 44d | 10d | Cash Flow [516.93 h]; Pipe Fitter - CHW [24 h]; Excavation [3] | 516.93 | MEP | AC | 2nd Fix | 2f |
|  | 4 | **Final Fix** |  | 2015-10-27 | 2015-11-07 |  |  |  |  |  |  |  |  |  |
| BL2-MEP-AC-8F-3000 |  | Grills and Diffusers Fixing | 12d | 2015-10-27 | 2015-11-07 | BL2-MEP-AC-8F-2030, BL2-MEP-AC-7F-3000, BL2-FN-8F-1070 | 97d | 39d | Cash Flow [11538.6 h]; Ductman [384 h]; Excavation [12] | 11,538.61 | MEP | AC | Final F | ff |
|  | 1 | **Plumbing and Drainage Works** |  | 2015-07-25 | 2015-12-16 |  |  |  |  |  |  |  |  |  |
|  | 1 | **1st Fix** |  | 2015-07-25 | 2015-08-05 |  |  |  |  |  |  |  |  |  |
| BL2-MEP-PL-8F-1000 |  | Low Level Water Supply Pipes Installation | 12d | 2015-07-25 | 2015-08-05 | BL2-MEP-PL-7F-1000, BL2-FN-8F-1000 | 34d | 0d | Cash Flow [713.22 h]; Plumber [42 h]; Excavation [12] | 713.22 | MEP | PL & D | 1st Fix | 1f |
| BL2-MEP-PL-8F-1010 |  | Low Level Drainage Pipes Installation | 12d | 2015-07-25 | 2015-08-05 | BL2-MEP-PL-7F-1010, BL2-FN-8F-1000 | 34d | 0d | Cash Flow [2279.46 h]; Plumber [12.67 h]; Excavation [12] | 2,279.46 | MEP | PL & D | 1st Fix | 1f |
| BL2-MEP-PL-8F-1020 |  | Supports installation for High level Pipes | 12d | 2015-07-25 | 2015-08-05 | BL2-MEP-PL-7F-1020, BL2-FN-8F-1000 | 83d | 30d | Cash Flow [819.68 h]; Plumber [16.35 h]; Excavation [12] | 819.68 | MEP | PL & D | 1st Fix | 1f |
|  | 3 | **2nd Fix** |  | 2015-09-05 | 2015-10-20 |  |  |  |  |  |  |  |  |  |
| BL2-MEP-PL-8F-2000 |  | High Level Water Supply Pipes and Fittings Installation | 21d | 2015-09-05 | 2015-09-25 | BL2-MEP-PL-8F-1020, BL2-MEP-PL-8F-1000, BL2-MEP-PL-7F-2000, BL2-FN-8F-1010 | 53d | 0d | Cash Flow [1308.6 h]; Plumber [150.02 h]; Excavation [21] | 1,308.6 | MEP | PL & D | 2nd Fix | 2f |
| BL2-MEP-PL-8F-2010 |  | High Level Drainage Pipes Installation | 21d | 2015-09-05 | 2015-09-25 | BL2-MEP-PL-8F-1020, BL2-MEP-PL-8F-1010, BL2-MEP-PL-7F-2010, BL2-FN-8F-1010 | 53d | 19d | Cash Flow [6562.53 h]; Plumber [244.38 h]; Excavation [21] | 6,562.53 | MEP | PL & D | 2nd Fix | 2f |
| BL2-MEP-PL-8F-2020 |  | Water Supply Pipes Pressure Test | 6d | 2015-09-26 | 2015-10-01 | BL2-MEP-PL-8F-2000, BL2-MEP-PL-8F-1000, BL2-MEP-PL-7F-2020 | 53d | 19d | Cash Flow [145.74 h]; Plumber [48 h]; Excavation [6] | 145.74 | MEP | PL & D | 2nd Fix | 2f |
| BL2-MEP-PL-8F-2030 |  | Floor Drain Installation | 6d | 2015-10-09 | 2015-10-14 | BL2-MEP-PL-7F-2030, BL2-FN-8F-1060 | 34d | 0d | Cash Flow [548.14 h]; Plumber [6 h]; Excavation [6] | 548.14 | MEP | PL & D | 1st Fix | 2f |
| BL2-MEP-PL-8F-2040 |  | Drainage Pipes Gravity Test | 6d | 2015-10-15 | 2015-10-20 | BL2-MEP-PL-8F-2010, BL2-MEP-PL-8F-1010, BL2-MEP-PL-8F-2030, BL2-MEP-PL-7F-2040 | 34d | 0d | Cash Flow [820.24 h]; Plumber [48 h]; Excavation [6] | 820.24 | MEP | PL & D | 2nd Fix | 2f |
|  | 4 | **Final Fix** |  | 2015-11-27 | 2015-12-16 |  |  |  |  |  |  |  |  |  |
| BL2-MEP-PL-8F-3000 |  | Sanitary Ware Installation Including Connection | 14d | 2015-11-27 | 2015-12-10 | BL2-MEP-PL-8F-2020, BL2-MEP-PL-8F-2040, BL2-MEP-PL-7F-3000, BL2-FN-8F-1060, BL2-FN-8F-1050, BL2-FN-8F-1070, BL2-FN-8F-1090 | 33d | 0d | Cash Flow [4439.52 h]; Plumber [383.86 h]; Excavation [14] | 4,439.52 | MEP | PL & D | Final F | ff |
| BL2-MEP-PL-8F-3010 |  | Sanitary Ware Accessories Installation | 6d | 2015-12-11 | 2015-12-16 | BL2-MEP-PL-8F-3000, BL2-MEP-PL-7F-3010 | 33d | 0d | Cash Flow [160.22 h]; Plumber [36.45 h]; Excavation [6] | 160.22 | MEP | PL & D | Final F | ff |

| ID | WBS | Activity | Duration | Start | Finish | Predecessors | Total float | Free float | Resources | Cost | Responsibility | MEP Systems | MEP Steps | Fix |
| --- | --- | --- | --- | --- | --- | --- | --- | --- | --- | --- | --- | --- | --- | --- |
|  | 3 | **Fire Fighting Works** |  | 2015-10-31 | 2015-12-13 |  |  |  |  |  |  |  |  |  |
|  | 4 | **Final Fix** |  | 2015-10-31 | 2015-12-13 |  |  |  |  |  |  |  |  |  |
| BL2-MEP-FF-8F-3010 |  | Hose reel Cabinet Installation and Connection | 6d | 2015-10-31 | 2015-11-05 | BL2-MEP-FF-7F-3010, BL2-FN-8F-1050, BL2-FN-8F-1070 | 99d | 38d | Cash Flow [1330.85 h]; Plumber [192 h]; Excavation [6] | 1,330.85 | MEP | FF | Final F | ff |
| BL2-MEP-FF-8F-3000 |  | Fire Extinguisher Installation | 2d | 2015-12-12 | 2015-12-13 | BL2-MEP-FF-7F-3000, BL2-FN-8F-1050, BL2-FN-8F-1100 SS+1d | 61d | 0d | Cash Flow [1074.99 h]; Plumber [8 h]; Excavation [2] | 1,074.99 | MEP | FF | Final F | ff |
|  | 3 | **Electrical System** |  | 2015-07-16 | 2015-11-19 |  |  |  |  |  |  |  |  |  |
|  | 1 | **1st Fix** |  | 2015-07-16 | 2015-07-30 |  |  |  |  |  |  |  |  |  |
| BL2-MEP-EL-8F-1000 |  | PVC Back Boxes and Conduits Fixing in Wall | 12d | 2015-07-16 | 2015-07-27 | BL2-MEP-EL-7F-1000, BL2-FN-8F-1000 SS+3d, BL2-FN-8F-1000 FF+3d | 26d | 1d | Cash Flow [3307.67 h]; Electrician [384 h]; Excavation [12] | 3,307.67 | MEP | EL | 1st Fix | 1f |
| BL2-MEP-EL-8F-1010 |  | DB's Inclosure Fixing | 6d | 2015-07-25 | 2015-07-30 | BL2-MEP-EL-7F-1010, BL2-FN-8F-1000 | 40d | 6d | Cash Flow [2130.4 h]; Electrician [96 h]; Excavation [6] | 2,130.4 | MEP | EL | 1st Fix | 1f |
|  | 2 | **2nd Fix** |  | 2015-08-25 | 2015-10-04 |  |  |  |  |  |  |  |  |  |
| BL2-MEP-EL-8F-2000 |  | Emergency Light Wiring | 8d | 2015-08-25 | 2015-09-01 | BL2-MEP-EL-8F-1000, BL2-MEP-EL-7F-2030, BL2-FN-8F-1010 | 83d | 49d | Cash Flow [1202.03 h]; Electrician [128 h]; Excavation [8] | 1,202.03 | MEP | EL | 2nd Fix | 2f |
| BL2-MEP-EL-8F-2010 |  | Low Current System Wiring | 14d | 2015-08-25 | 2015-09-07 | BL2-MEP-EL-8F-1000, BL2-FN-8F-1010 | 137d | 49d | Cash Flow [38217.8 h]; Electrician [244 h]; Excavation [14] | 38,217.78 | MEP | EL |  | 2f |
| BL2-MEP-EL-8F-2020 |  | Lighting Wiring | 12d | 2015-08-25 | 2015-09-05 | BL2-MEP-EL-8F-1000, BL2-MEP-EL-7F-2000, BL2-FN-8F-1010 | 79d | 0d | Cash Flow [3566.08 h]; Electrician [241.71 h]; Excavation [12] | 3,566.08 | MEP | EL | 2nd Fix | 2f |
| BL2-MEP-EL-8F-2030 |  | Power Points Wiring | 12d | 2015-08-25 | 2015-09-05 | BL2-MEP-EL-8F-1000, BL2-MEP-EL-7F-2010, BL2-FN-8F-1010 | 79d | 0d | Cash Flow [2894.21 h]; Electrician [192 h]; Excavation [12] | 2,894.21 | MEP | EL | 2nd Fix | 2f |
| BL2-MEP-EL-8F-2040 |  | Fire Alarm System Wiring | 12d | 2015-08-25 | 2015-09-05 | BL2-MEP-EL-8F-1000, BL2-MEP-EL-7F-2040, BL2-FN-8F-1010 | 79d | 0d | Cash Flow [7111.01 h]; Electrician [192 h]; Excavation [12] | 7,111.01 | MEP | EL | 2nd Fix | 2f |
| BL2-MEP-EL-8F-2050 |  | Cable Tray and Trunking Installation | 14d | 2015-08-25 | 2015-09-07 | BL2-MEP-EL-7F-2020, BL2-FN-8F-1010 | 77d | 13d | Cash Flow [9064.45 h]; Electrician [336 h]; Excavation [14] | 9,064.45 | MEP | EL | 2nd Fix | 2f |
| BL2-MEP-EL-8F-2060 |  | SMDB's Installation | 6d | 2015-09-09 | 2015-09-14 | BL2-MEP-EL-8F-1000, BL2-FN-8F-1020, BL2-MEP-EL-7F-2060 | 135d | 0d | Cash Flow [4196.6 h]; Electrician [45 h]; Excavation [6] | 4,196.6 | MEP | EL | 2nd Fix | 2f |
| BL2-MEP-EL-8F-2070 |  | DB's Installation and Termination | 12d | 2015-09-09 | 2015-09-20 | BL2-MEP-EL-8F-1010, BL2-MEP-EL-7F-2070, BL2-FN-8F-1020 | 64d | 30d | Cash Flow [4970.93 h]; Electrician [288 h]; Excavation [12] | 4,970.93 | MEP | EL | 2nd Fix | 2f |
| BL2-MEP-EL-8F-3000 |  | Power Cable Puling | 14d | 2015-09-21 | 2015-10-04 | BL2-MEP-EL-8F-2050, BL2-MEP-EL-8F-2020, BL2-MEP-EL-8F-2030, BL2-MEP-EL-7F-3000 | 107d | 3d | Cash Flow [6361.76 h]; Electrician [168 h]; Excavation [14] | 6,361.76 | MEP | EL | 2nd Fix | 2f |
|  | 3 | **Final Fix** |  | 2015-10-27 | 2015-11-19 |  |  |  |  |  |  |  |  |  |
| BL2-MEP-EL-8F-3010 |  | SMDB's Termination and Final Connection | 6d | 2015-10-27 | 2015-11-01 | BL2-MEP-EL-8F-2060, BL2-MEP-EL-7F-3010, BL2-MEP-EL-8F-3000, BL2-FN-8F-1070 | 93d | 0d | Cash Flow [2785.83 h]; Electrician [192 h]; Excavation [6] | 2,785.82 | MEP | EL | Final F | ff |
| BL2-MEP-EL-8F-3020 |  | Lights Fitting Fixing | 14d | 2015-10-27 | 2015-11-09 | BL2-MEP-EL-8F-2020, BL2-FN-8F-1070, BL2-MEP-EL-7F-3020 | 85d | 0d | Cash Flow [7322.66 h]; Electrician [244 h]; Excavation [14] | 7,322.66 | MEP | EL | Final F | ff |
| BL2-MEP-EL-8F-3030 |  | Emergency Light Fixing | 8d | 2015-10-27 | 2015-11-03 | BL2-MEP-EL-8F-2000, BL2-FN-8F-1070, BL2-MEP-EL-7F-3030 | 104d | 43d | Cash Flow [5714.02 h]; Electrician [128 h]; Excavation [8] | 5,714.02 | MEP | EL | Final F | ff |
| BL2-MEP-EL-8F-3040 |  | Fire Alarm System Detector Installation | 12d | 2015-10-27 | 2015-11-07 | BL2-MEP-EL-8F-2040, BL2-FN-8F-1070, BL2-MEP-EL-7F-3040 | 89d | 0d | Cash Flow [4034.38 h]; Electrician [192 h]; Excavation [12] | 4,034.38 | MEP | EL | Final F | ff |
| BL2-MEP-EL-8F-3050 |  | Despature for Low Current System Installation | 14d | 2015-10-27 | 2015-11-09 | BL2-MEP-EL-8F-2010, BL2-FN-8F-1020, BL2-FN-8F-1070 | 88d | 0d | Cash Flow [72738.2 h]; Electrician [336 h]; Excavation [14] | 72,738.16 | MEP | EL |  | ff |
| BL2-MEP-EL-8F-3070 |  | Sockets and Switches Fixing | 8d | 2015-10-27 | 2015-11-03 | BL2-MEP-EL-8F-2030, BL2-FN-8F-1070, BL2-MEP-EL-7F-3070 | 97d | 0d | Cash Flow [1166.96 h]; Electrician [128 h]; Excavation [8] | 1,166.96 | MEP | EL | Final F | ff |
| BL2-MEP-EL-8F-3060 |  | Low Current System Outlet installation and Connection | 10d | 2015-11-10 | 2015-11-19 | BL2-MEP-EL-8F-2010, BL2-MEP-EL-8F-3050 | 88d | 27d | Cash Flow [3860.79 h]; Electrician [80 h]; Excavation [10] | 3,860.79 | MEP | EL |  | ff |

| ID | WBS | Activity | Duration | Start | Finish | Predecessors | Total float | Free float | Calendar | Resources | Cost | Structural | Responsibility | MEP Systems | MEP Steps | Finishing |
| --- | --- | --- | --- | --- | --- | --- | --- | --- | --- | --- | --- | --- | --- | --- | --- | --- |
|  | 12 | **Roof** |  | 2015-05-28 | 2016-01-18 |  |  |  |  |  |  |  |  |  |  |  |
|  | 1 | **Structural** |  | 2015-05-28 | 2015-07-08 |  |  |  |  |  |  |  |  |  |  |  |
| BL2-ST-9F-1000 |  | Reinforcement for Verticals | 5d | 2015-05-28 | 2015-06-02 | ENG-STR-BL2-APP350, ENG-STR-BL2-APP360, ENG-STR-BL2-APP370, ENG-STR-BL2-APP380, BL2-ST-8F-1070 | 24d | 0d |  | MNHRS [842.2 h]; Cash Flow [56308.2 h]; Reinforcement [37996.5]; Excavation [5] | 56,308.21 | STR |  |  |  |  |
| BL2-ST-9F-1010 |  | MEP Works in Vertical Element | 5d | 2015-05-28 | 2015-06-02 | ENGMEP8650, BL2-ST-9F-1000 FF | 29d | 5d |  | Cash Flow [1798.55 h]; Electrician [160 h]; Excavation [5] | 1,798.55 |  | MEP | EL | B.W |  |
| BL2-ST-9F-1020 |  | FW for Verticals | 5d | 2015-06-03 | 2015-06-07 | BL2-ST-9F-1000 | 24d | 0d |  | MNHRS [12043.8 h]; Cash Flow [52949.5 h]; FW [1700.37]; Excavation [5] | 52,949.5 | STR |  |  |  |  |
| BL2-ST-9F-1030 |  | Concrete Verticals | 1d | 2015-06-08 | 2015-06-08 | BL2-ST-9F-1020, BL2-ST-9F-1010 | 24d | 0d |  | MNHRS [2003.27 h]; Cash Flow [33907.1 h]; Concrete [174]; Excavation [1] | 33,907.07 | STR |  |  |  |  |
| BL2-ST-9F-1040 |  | FW for Slab | 5d | 2015-06-09 | 2015-06-13 | BL2-ST-9F-1030 | 24d | 0d |  | MNHRS [16202.4 h]; Cash Flow [71232.8 h]; FW [1983]; Excavation [5] | 71,232.75 | STR |  |  |  |  |
| BL2-ST-9F-1050 |  | Reinforcement for Slab | 5d | 2015-06-14 | 2015-06-18 | BL2-ST-9F-1040 | 24d | 0d |  | MNHRS [1629.17 h]; Cash Flow [108924 h]; Reinforcement [81838]; Excavation [5] | 108,923.67 | STR |  |  |  |  |
| BL2-ST-9F-1060 |  | MEP Works in Slab & Beams | 5d | 2015-06-14 | 2015-06-18 | ENGMEP8650, BL2-ST-9F-1050 FF | 24d | 0d |  | Cash Flow [3349.02 h]; Electrician [320 h]; Excavation [5] | 3,349.02 |  | MEP | EL | B.W |  |
| BL2-ST-9F-1070 |  | Concrete for Slab | 1d | 2015-06-19 | 2015-06-19 | BL2-ST-9F-1050, BL2-ST-9F-1060 | 24d | 0d |  | MNHRS [4319.68 h]; Cash Flow [73114.5 h]; Concrete [442]; Excavation [1] | 73,114.49 | STR |  |  |  |  |
| BL2-ST-9F-1080 |  | Reinforcement for Staircase Verticals | 5d | 2015-06-20 | 2015-06-24 | BL2-ST-9F-1070 | 21d | 0d | EMIRAL ALGERIA | Excavation [5] |  |  |  |  |  |  |
| BL2-ST-9F-1090 |  | FW for Parapet | 8d | 2015-06-20 | 2015-06-28 | BL2-ST-9F-1070 | 57d | 0d | EMIRAL ALGERIA | Excavation [8] |  |  |  |  |  |  |
| BL2-ST-9F-1100 |  | Reinforcement for Parapet | 3d | 2015-06-23 | 2015-06-25 | BL2-ST-9F-1090 SS+3d | 59d | 2d | EMIRAL ALGERIA | Excavation [3] |  |  |  |  |  |  |
| BL2-ST-9F-1110 |  | FW for Staircase Verticals | 4d | 2015-06-25 | 2015-06-29 | BL2-ST-9F-1080 | 21d | 0d | EMIRAL ALGERIA | Excavation [4] |  |  |  |  |  |  |
| BL2-ST-9F-1120 |  | Concrete for Parapet | 1d | 2015-06-29 | 2015-06-29 | BL2-ST-9F-1090, BL2-ST-9F-1100 | 57d | 35d | EMIRAL ALGERIA | Excavation [1] |  |  |  |  |  |  |
| BL2-ST-9F-1130 |  | Concrete for Staircase Verticals | 1d | 2015-06-30 | 2015-06-30 | BL2-ST-9F-1110 | 21d | 0d | EMIRAL ALGERIA | Excavation [1] |  |  |  |  |  |  |
| BL2-ST-9F-1140 |  | FW for Staircase Slab | 3d | 2015-07-01 | 2015-07-04 | BL2-ST-9F-1130 | 21d | 0d | EMIRAL ALGERIA | Excavation [3] |  |  |  |  |  |  |
| BL2-ST-9F-1150 |  | Reinforcement for Staircase Slab | 3d | 2015-07-05 | 2015-07-07 | BL2-ST-9F-1140 | 21d | 0d | EMIRAL ALGERIA | Excavation [3] |  |  |  |  |  |  |
| BL2-ST-9F-1160 |  | Concrete for Staircase Slab | 1d | 2015-07-08 | 2015-07-08 | BL2-ST-9F-1150 | 21d | 0d | EMIRAL ALGERIA | Excavation [1] |  |  |  |  |  |  |
|  | 2 | **Fiishing** |  | 2015-07-23 | 2015-12-11 |  |  |  |  |  |  |  |  |  |  |  |
| BL2-FN-9F-1000 |  | Block Works | 15d | 2015-07-23 | 2015-08-06 | BL2-ST-9F-1160 FS+14d | 25d | 0d |  | Cash Flow [38072.9 h]; MNHRS [2864 h]; BW [748]; Excavation [15] | 38,072.91 |  |  |  |  | FIN |
| BL2-FN-9F-1010 |  | Plaster | 15d | 2015-08-10 | 2015-08-24 | BL2-FN-9F-1000, BL2-MEP-EL-9F-1000, BL2-ST-9F-1120 | 25d | 0d |  | MNHRS [4486 h]; Cash Flow [52728.8 h]; Plaster [1495]; Excavation [15] | 52,728.76 |  |  |  |  | FIN |
| BL2-FN-9F-1020 |  | Paint 1st Coat | 15d | 2015-08-20 | 2015-09-03 | BL2-FN-9F-1010 SS+10d | 25d | 0d |  | MNHRS [722 h]; Cash Flow [8121.06 h]; Painting [1495]; Excavation [15] | 8,121.06 |  |  |  |  | FIN |
| BL2-FN-9F-1060 |  | Flooring Works | 20d | 2015-09-04 | 2015-09-23 | BL2-FN-9F-1020 | 25d | 0d |  | MNHRS [1478 h]; Cash Flow [34452 h]; Tiling [225.02]; Excavation [20] | 34,452.02 |  |  |  |  | FIN |
| BL2-FN-9F-1080 |  | Hand Rails for Stairs | 15d | 2015-09-24 | 2015-10-08 | BL2-FN-9F-1060 | 160d | 49d |  | Cash Flow [14225.7 h]; Metal Works & Handrail [30]; MNHRS [64.5 h]; Excavation [15] | 14,225.69 |  |  |  |  | FIN |
| BL2-FN-9F-1090 |  | Final Paint | 10d | 2015-11-17 | 2015-11-26 | BL2-FN-9F-1060, BL2-MEP-EL-9F-3020 FF+3d, BL2-MEP-EL-9F-3040 FF+3d, BL2-MEP-EL-9F-3050 FF+3d, BL2-MEP-EL-9F-2030 FF+3d, BL2-MEP-EL-9F-3000 FF+3d, BL2-MEP-EL-9F-3030 FF+3d, BL2-MEP-EL-9F-3010 FF+3d | 85d | 0d |  | Excavation [10] |  |  |  |  |  | FIN |
| BL2-FN-9F-1100 |  | Doors Installation | 15d | 2015-11-27 | 2015-12-11 | BL2-FN-9F-1080, BL2-FN-8F-1090 | 111d |  |  | Cash Flow [25990.1 h]; Excavation [15] | 25,990.11 |  |  |  |  | FIN |

| ID | WBS | Activity | Type | Duration | Start | Finish | Predecessors | Total float | Free float | Resources | Cost | Responsibility | MEP Systems | MEP Steps | Fix |
| --- | --- | --- | --- | --- | --- | --- | --- | --- | --- | --- | --- | --- | --- | --- | --- |
|  | 11 | **MEP Work** |  |  | 2015-07-29 | 2016-01-18 |  |  |  |  |  |  |  |  |  |
|  | 1 | **Mechanical System** |  |  | 2015-08-25 | 2015-12-28 |  |  |  |  |  |  |  |  |  |
|  | 2 | **HVAC Works** |  |  | 2015-09-23 | 2015-12-28 |  |  |  |  |  |  |  |  |  |
|  | 1 | **1st Fix** |  |  | 2015-09-23 | 2015-10-11 |  |  |  |  |  |  |  |  |  |
| BL2-MEP-AC-9F-1000 |  | Foundation for MEP Equipments ready | milestone | 0d | 2015-09-23 | 2015-09-23 | BL2-FN-9F-1060 | 25d | 0d |  |  | MEP | AC | 1st Fix |  |
| BL2-MEP-AC-9F-1010 |  | Supports and Hungers Fixing |  | 18d | 2015-09-24 | 2015-10-11 | BL2-MEP-AC-6F-1000, OFF-ENG-MEP-AC1190, OFF-PRO-MEP-AC1520, BL2-MEP-AC-9F-1000 | 25d | 0d | Cash Flow [979.38 h]; Ductman [192 h]; Excavation [18] | 979.38 | MEP | AC | 1st Fix | 1f |
|  | 3 | **2nd Fix** |  |  | 2015-10-12 | 2015-12-28 |  |  |  |  |  |  |  |  |  |
| BL2-MEP-AC-9F-2000 |  | Heat Pumps Installation |  | 21d | 2015-10-12 | 2015-11-01 | BL2-MEP-AC-9F-1000, BL2-MEP-AC-9F-1010, OFF-PRO-MEP-AC1220 | 25d | 0d | Cash Flow [209058 h]; Pipe Fitter - CHW [252 h]; Excavation [21] | 209,058.47 | MEP | AC | 2nd Fix | 2f |
| BL2-MEP-AC-9F-2010 |  | AHU's Installation |  | 21d | 2015-10-12 | 2015-11-01 | BL2-MEP-AC-9F-1000, BL2-MEP-AC-9F-1010, OFF-PRO-MEP-AC1270 | 27d | 0d | Cash Flow [119901 h]; Pipe Fitter - CHW [252 h]; Excavation [21] | 119,900.72 | MEP | AC | 2nd Fix | 2f |
| BL2-MEP-AC-9F-2020 |  | Pressurization Units Installation |  | 21d | 2015-10-12 | 2015-11-01 | BL2-MEP-AC-9F-1000, BL2-MEP-AC-9F-1010 | 27d | 0d | Cash Flow [14019 h]; Pipe Fitter - CHW [252 h]; Excavation [21] | 14,018.95 | MEP | AC | 2nd Fix | 2f |
| BL2-MEP-AC-9F-2030 |  | Chemical Treatment Unit Installation |  | 14d | 2015-10-12 | 2015-10-25 | BL2-MEP-AC-9F-1000, BL2-MEP-AC-9F-1010, OFF-PRO-MEP-AC1420 | 89d | 64d | Cash Flow [45456.4 h]; Pipe Fitter - CHW [168 h]; Excavation [14] | 45,456.38 | MEP | AC | 2nd Fix | 2f |
| BL2-MEP-AC-9F-2040 |  | Duct Installation and Insulation |  | 30d | 2015-11-02 | 2015-12-01 | BL2-MEP-AC-9F-1010, BL2-MEP-AC-8F-2010, BL2-MEP-AC-9F-2010, BL2-MEP-AC-9F-2020 | 27d | 0d | Cash Flow [5549.65 h]; Ductman [960 h]; Excavation [30] | 5,549.65 | MEP | AC | 2nd Fix | 2f |
| BL2-MEP-AC-9F-2050 |  | Chilled Water Pipes and Fittings Installation and Final Connection |  | 30d | 2015-11-02 | 2015-12-01 | BL2-MEP-AC-9F-1010, BL2-MEP-AC-8F-2020, BL2-MEP-AC-9F-2000 | 25d | 0d | Cash Flow [14864.8 h]; Pipe Fitter - CHW [480 h]; Excavation [30] | 14,864.75 | MEP | AC | 2nd Fix | 2f |
| BL2-MEP-AC-9F-2060 |  | BTU Meter Installation |  | 6d | 2015-11-02 | 2015-11-07 | BL2-MEP-AC-9F-2010 | 76d | 51d | Cash Flow [17896 h]; Pipe Fitter - CHW [48 h]; Excavation [6] | 17,896.03 | MEP | AC | 2nd Fix | 2f |
| BL2-MEP-AC-9F-2070 |  | Extract and Fresh Fan's Installation |  | 25d | 2015-12-02 | 2015-12-26 | BL2-MEP-AC-9F-2040, BL2-MEP-AC-9F-1000, OFF-PRO-MEP-AC1470 | 27d | 2d | Cash Flow [159180 h]; Pipe Fitter - CHW [800 h]; Excavation [25] | 159,180.34 | MEP | AC | 2nd Fix | 2f |
| BL2-MEP-AC-9F-2080 |  | Chilled Water Pipes Pressure Test |  | 6d | 2015-12-02 | 2015-12-07 | BL2-MEP-AC-9F-2050 | 25d | 0d | Cash Flow [1651.63 h]; Pipe Fitter - CHW [48 h]; Excavation [6] | 1,651.63 | MEP | AC | 2nd Fix | 2f |
| BL2-MEP-AC-9F-2090 |  | Chilled Water Pipes Insulation |  | 18d | 2015-12-08 | 2015-12-25 | BL2-MEP-AC-9F-2080, BL2-MEP-AC-8F-2050 | 49d | 3d | Cash Flow [4717.51 h]; Pipe Fitter - CHW [288 h]; Excavation [18] | 4,717.51 | MEP | AC | 2nd Fix | 2f |
| BL2-MEP-AC-9F-2100 |  | Chilled Water Pumps Installation and Final Connection |  | 21d | 2015-12-08 | 2015-12-28 | BL2-MEP-AC-9F-2080, BL2-MEP-AC-9F-1000, OFF-PRO-MEP-AC1370 | 25d | 0d | Cash Flow [164158 h]; Pipe Fitter - CHW [336 h]; Excavation [21] | 164,158.24 | MEP | AC | 2nd Fix | 2f |
|  | 1 | **Plumbing and Drainage Works** |  |  | 2015-08-25 | 2015-09-29 |  |  |  |  |  |  |  |  |  |
|  | 4 | **Final Fix** |  |  | 2015-08-25 | 2015-09-29 |  |  |  |  |  |  |  |  |  |
| BL2-MEP-PL-9F-3000 |  | Vent Pipes Installation |  | 14d | 2015-08-25 | 2015-09-07 | OFF-ENG-MEP-DR1140, BL2-FN-9F-1010 | 122d | 16d | Cash Flow [971.63 h]; Plumber [383.86 h]; Excavation [14] | 971.63 | MEP | PL & D | Final F | ff |
| BL2-MEP-PL-9F-3010 |  | Rain Outlet Installation |  | 6d | 2015-09-24 | 2015-09-29 | BL2-MEP-PL-9F-3000, BL2-FN-9F-1010, BL2-FN-9F-1060 | 133d | 72d | Cash Flow [444.47 h]; Plumber [36.45 h]; Excavation [6] | 444.47 | MEP | PL & D | Final F | ff |
| BL2-MEP-PL-9F-3020 |  | Pip Tap Fixing |  | 4d | 2015-09-24 | 2015-09-27 | BL1-MEP-PL-7F-3020, BL2-MEP-PL-9F-3000, BL2-FN-9F-1060 | 106d | 72d | Cash Flow [124.04 h]; Plumber [8 h]; Excavation [4] | 124.04 | MEP | PL & D | Final F | ff |
|  | 3 | **Fire Fighting Works** |  |  | 2015-11-18 | 2015-11-19 |  |  |  |  |  |  |  |  |  |
|  | 4 | **Final Fix** |  |  | 2015-11-18 | 2015-11-19 |  |  |  |  |  |  |  |  |  |
| BL2-MEP-FF-9F-3000 |  | Fire Extinguisher Installation |  | 2d | 2015-11-18 | 2015-11-19 | BL2-FN-9F-1060, BL2-FN-9F-1090 SS+1d | 85d | 24d | Cash Flow [1074.99 h]; Plumber [8 h]; Excavation [2] | 1,074.99 | MEP | FF | Final F | ff |

| ID | WBS | Activity | Duration | Start | Finish | Predecessors | Total float | Free float | Resources | Cost | Responsibility | MEP Systems | MEP Steps | Fix |
| --- | --- | --- | --- | --- | --- | --- | --- | --- | --- | --- | --- | --- | --- | --- |
|  | 3 | **Electrical System** |  | 2015-07-29 | 2016-01-18 |  |  |  |  |  |  |  |  |  |
|  | 1 | **1st Fix** |  | 2015-07-29 | 2015-08-09 |  |  |  |  |  |  |  |  |  |
| BL2-MEP-EL-9F-1000 |  | PVC Back Boxes and Conduits Fixing in Wall | 12d | 2015-07-29 | 2015-08-09 | BL2-MEP-EL-8F-1000, BL2-FN-9F-1000 SS+3d, BL2-FN-9F-1000 FF+3d | 25d | 0d | Cash Flow [3307.67 h]; Electrician [384 h]; Excavation [12] | 3,307.67 | MEP | EL | 1st Fix | 1f |
|  | 2 | **2nd Fix** |  | 2015-08-25 | 2015-10-21 |  |  |  |  |  |  |  |  |  |
| BL2-MEP-EL-9F-2030 |  | Lighting Protection | 5d | 2015-08-25 | 2015-08-29 | BL2-MEP-EL-9F-1000, ENGMEP8870, BL2-FN-9F-1010 | 171d | 86d | Cash Flow [41.35 h]; Electrician [160 h]; Excavation [5] | 41.35 | MEP | EL | 2nd Fix | 2f |
| BL2-MEP-EL-9F-2000 |  | Lighting Wiring | 12d | 2015-09-06 | 2015-09-17 | BL2-MEP-EL-9F-1000, BL2-MEP-EL-8F-2020, BL2-FN-9F-1010 | 124d | 6d | Cash Flow [3566.08 h]; Electrician [241.71 h]; Excavation [12] | 3,566.08 | MEP | EL | 2nd Fix | 2f |
| BL2-MEP-EL-9F-2010 |  | Power Points Wiring | 12d | 2015-09-06 | 2015-09-17 | BL2-MEP-EL-9F-1000, BL2-MEP-EL-8F-2030, BL2-FN-9F-1010 | 124d | 20d | Cash Flow [2894.21 h]; Electrician [192 h]; Excavation [12] | 2,894.21 | MEP | EL | 2nd Fix | 2f |
| BL2-MEP-EL-9F-2020 |  | Fire Alarm System Wiring | 12d | 2015-09-06 | 2015-09-17 | BL2-MEP-EL-9F-1000, BL2-MEP-EL-8F-2040, BL2-FN-9F-1010 | 140d | 51d | Cash Flow [7111.01 h]; Electrician [192 h]; Excavation [12] | 7,111.01 | MEP | EL | 2nd Fix | 2f |
| BL2-MEP-EL-9F-2040 |  | SMDB's Installation | 6d | 2015-09-15 | 2015-09-20 | BL2-MEP-EL-9F-1000, BL2-FN-9F-1020, BL2-MEP-EL-8F-2060 | 135d | 42d | Cash Flow [4196.6 h]; Electrician [45 h]; Excavation [6] | 4,196.6 | MEP | EL | 2nd Fix | 2f |
| BL2-MEP-EL-9F-2050 |  | Cable Tray and Trunking Installation | 14d | 2015-09-24 | 2015-10-07 | BL2-MEP-EL-8F-2050, BL2-FN-9F-1060 | 104d | 0d | Cash Flow [9064.45 h]; Electrician [336 h]; Excavation [14] | 9,064.45 | MEP | EL | 2nd Fix | 2f |
| BL2-MEP-EL-9F-3030 |  | Power Cable Puling | 14d | 2015-10-08 | 2015-10-21 | BL2-MEP-EL-9F-2050, BL2-MEP-EL-9F-2000, BL2-MEP-EL-9F-2010, BL2-MEP-EL-8F-3000, BL2-FN-9F-1060 | 104d | 11d | Cash Flow [6361.76 h]; Electrician [168 h]; Excavation [14] | 6,361.76 | MEP | EL | 2nd Fix | 2f |
|  | 3 | **Final Fix** |  | 2015-09-24 | 2016-01-18 |  |  |  |  |  |  |  |  |  |
| BL2-MEP-EL-9F-3000 |  | Air Craft Lights Installation | 10d | 2015-09-24 | 2015-10-03 | BL2-MEP-EL-9F-1000, BL2-MEP-EL-9F-2000, PROCMEPELE9480, BL2-FN-9F-1060 | 136d | 51d | Cash Flow [82.69 h]; Electrician [160 h]; Excavation [10] | 82.69 | MEP | EL | Final F | ff |
| BL2-MEP-EL-9F-3010 |  | SMDB's Termination and Final Connection | 6d | 2015-11-02 | 2015-11-07 | BL2-MEP-EL-9F-2040, BL2-MEP-EL-9F-2010, BL2-MEP-EL-8F-3010, BL2-MEP-EL-9F-3030 | 93d | 16d | Cash Flow [2785.83 h]; Electrician [192 h]; Excavation [6] | 2,785.82 | MEP | EL | Final F | ff |
| BL2-MEP-EL-9F-3050 |  | Sockets and Switches Fixing | 8d | 2015-11-04 | 2015-11-11 | BL2-MEP-EL-9F-2010, BL2-FN-9F-1060, BL2-MEP-EL-8F-3070 | 97d | 12d | Cash Flow [1166.96 h]; Electrician [128 h]; Excavation [8] | 1,166.96 | MEP | EL | Final F | ff |
| BL2-MEP-EL-9F-3020 |  | Fire Alarm System Detector Installation | 12d | 2015-11-08 | 2015-11-19 | BL2-MEP-EL-9F-2020, BL2-FN-9F-1060, BL2-MEP-EL-8F-3040 | 89d | 4d | Cash Flow [4034.38 h]; Electrician [192 h]; Excavation [12] | 4,034.38 | MEP | EL | Final F | ff |
| BL2-MEP-EL-9F-3040 |  | Lights Fitting Fixing | 14d | 2015-11-10 | 2015-11-23 | BL2-MEP-EL-9F-2000, BL2-FN-9F-1060, BL2-MEP-EL-8F-3020 | 85d | 0d | Cash Flow [7322.66 h]; Electrician [244 h]; Excavation [14] | 7,322.66 | MEP | EL | Final F | ff |
| BL2-MEP-EL-9F-3060 |  | Equipments Panels Installation and Termination | 21d | 2015-12-29 | 2016-01-18 | BL2-MEP-EL-9F-2010, BL2-MEP-EL-9F-1000, BL2-MEP-AC-9F-2000, BL2-MEP-AC-9F-2010, BL2-MEP-AC-9F-2020, BL2-MEP-AC-9F-2030, BL2-MEP-AC-9F-2060, BL2-MEP-AC-9F-2070, BL2-MEP-AC-9F-2100 | 25d | 0d | Cash Flow [133382 h]; Electrician [1008 h]; Excavation [21] | 133,381.64 | MEP | EL | Final F | ff |
|  | 17 | **MEP Riser** |  | 2015-08-07 | 2015-08-31 |  |  |  |  |  |  |  |  |  |
| BL2-MEP-RZR-100 |  | Drainage Riser and Final Connection | 25d | 2015-08-07 | 2015-08-31 | OFF-ENG-MEP-DR1160, OFF-ENG-MEP-DR1170, BL2-FN-9F-1000 | 162d | 101d | Cash Flow [10202.1 h]; Excavation [25] | 10,202.1 | MEP | PL & D |  | 2f |
| BL2-MEP-RZR-110 |  | Chilled Water Pipes Riser and Final Connection | 25d | 2015-08-07 | 2015-08-31 | OFF-ENG-MEP-AC1220, BL2-FN-9F-1000 | 155d | 119d | Cash Flow [23205.4 h]; Pipe Fitter - CHW [672 h]; Excavation [25] | 23,205.39 | MEP | AC |  | 2f |
| BL2-MEP-RZR-120 |  | Fire Fighting Pipes Riser and Final Connection | 25d | 2015-08-07 | 2015-08-31 | OFF-ENG-MEP-FF1150, OFF-ENG-MEP-FF1160, BL2-FN-9F-1000 | 99d | 0d | Cash Flow [23153.7 h]; Plumber [800 h]; Excavation [25] | 23,153.71 | MEP | FF |  | 2f |
| BL2-MEP-RZR-130 |  | Water Supply Pipes Riser and Final Connection | 25d | 2015-08-07 | 2015-08-31 | OFF-ENG-MEP-WS1150, BL2-FN-9F-1000 | 140d | 107d | Cash Flow [8827.35 h]; Excavation [25] | 8,827.35 | MEP | PL & D |  | 2f |
| BL2-MEP-RZR-140 |  | Duct Riser Including Connection | 21d | 2015-08-07 | 2015-08-27 | OFF-ENG-MEP-AC1230, BL2-FN-9F-1000 | 169d | 123d | Cash Flow [33459.2 h]; Ductman [672 h]; Excavation [21] | 33,459.17 | MEP | AC |  | 2f |

| ID | WBS | Activity | Duration | Start | Finish | Predecessors | Total float | Free float | Resources | Cost | Facade | Structural | Responsibility | MEP Systems | MEP Steps |
| --- | --- | --- | --- | --- | --- | --- | --- | --- | --- | --- | --- | --- | --- | --- | --- |
|  | 1 | **Block 2** |  |  |  |  |  |  |  |  |  |  |  |  |  |
|  | 13 | **External Facade** |  | 2015-06-20 | 2015-10-17 |  |  |  |  |  |  |  |  |  |  |
|  | 1 | **North Elevation** |  | 2015-06-20 | 2015-07-19 |  |  |  |  |  |  |  |  |  |  |
| BL2-XE-NRTH-10 |  | Stone Fixation | 30d | 2015-06-20 | 2015-07-19 | BL2-ST-9F-1070 | 166d | 0d | Stone CLadding [1001]; MNHRS [6508.47 h]; Cash Flow [146376 h]; Excavation [30] | 146,375.7 | FCD |  |  |  |  |
| BL2-XE-NRTH-20 |  | Aluminum Glazing | 30d | 2015-06-20 | 2015-07-19 | BL2-ST-9F-1070 | 166d | 0d | Aluminum Cladding [595.9]; MNHRS [3873.6 h]; Cash Flow [218427 h]; Excavation [30] | 218,426.6 | FCD |  |  |  |  |
|  | 2 | **South Elevation** |  | 2015-07-20 | 2015-08-18 |  |  |  |  |  |  |  |  |  |  |
| BL2-XE-SOTH-10 |  | Stone Fixation | 30d | 2015-07-20 | 2015-08-18 | BL2-XE-NRTH-10, BL2-ST-9F-1070 | 166d | 0d | Stone CLadding [1001]; MNHRS [6508.47 h]; Cash Flow [146376 h]; Excavation [30] | 146,375.7 | FCD |  |  |  |  |
| BL2-XE-SOTH-20 |  | Aluminum Glazing | 30d | 2015-07-20 | 2015-08-18 | BL2-XE-NRTH-20, BL2-ST-9F-1070 | 166d | 0d | Aluminum Cladding [595.9]; MNHRS [3884 h]; Cash Flow [219031 h]; Excavation [30] | 219,031.4 | FCD |  |  |  |  |
|  | 3 | **West Elevation** |  | 2015-08-19 | 2015-09-17 |  |  |  |  |  |  |  |  |  |  |
| BL2-XE-WEST-10 |  | Stone Fixation | 30d | 2015-08-19 | 2015-09-17 | BL2-XE-SOTH-10, BL2-ST-9F-1070 | 166d | 0d | Stone CLadding [1961.4]; MNHRS [12749.6 h]; Cash Flow [286740 h]; Excavation [30] | 286,739.9 | FCD |  |  |  |  |
| BL2-XE-WEST-20 |  | Aluminum Glazing | 30d | 2015-08-19 | 2015-09-17 | BL2-XE-SOTH-20, BL2-ST-9F-1070 | 166d | 0d | Aluminum Cladding [1195]; MNHRS [7768.8 h]; Cash Flow [438065 h]; Excavation [30] | 438,065.3 | FCD |  |  |  |  |
|  | 4 | **East Elevation** |  | 2015-09-18 | 2015-10-17 |  |  |  |  |  |  |  |  |  |  |
| BL2-XE-EAST-10 |  | Stone Fixation | 30d | 2015-09-18 | 2015-10-17 | BL2-XE-WEST-10, BL2-ST-9F-1070 | 166d |  | Stone CLadding [1961.4]; MNHRS [12749.6 h]; Cash Flow [286740 h]; Excavation [30] | 286,739.9 | FCD |  |  |  |  |
| BL2-XE-EAST-20 |  | Aluminum Glazing | 30d | 2015-09-18 | 2015-10-17 | BL2-XE-WEST-20, BL2-ST-9F-1070 | 166d |  | Aluminum Cladding [1195]; MNHRS [7768.8 h]; Cash Flow [438065 h]; Excavation [30] | 438,065.3 | FCD |  |  |  |  |
|  | 14 | **Lift Installation** |  | 2015-09-29 | 2015-11-27 |  |  |  |  |  |  |  |  |  |  |
| BL2-LFT-10 |  | Lift Installation | 60d | 2015-09-29 | 2015-11-27 | BL3-LFT-10 SS-14d, BL2-ST-9F-1070 FS+30d | 125d |  | Cash Flow [365781 h]; Excavation [60] | 365,781.19 |  |  |  |  |  |
|  | 6 | **Block 3** |  | 2014-05-31 | 2016-03-01 |  |  |  |  |  |  |  |  |  |  |
|  | 1 | **Basement 2** |  | 2014-05-31 | 2015-12-10 |  |  |  |  |  |  |  |  |  |  |
|  | 1 | **Structural** |  | 2014-05-31 | 2014-08-06 |  |  |  |  |  |  |  |  |  |  |
| BL3-ST-B2-1000 |  | Blinding | 5d | 2014-05-31 | 2014-06-04 | BL2-ST-B2-1060 | 0d |  | Excavation [5] |  |  | STR |  |  |  |
| BL3-ST-B2-1010 |  | Waterproofing | 12d | 2014-06-05 | 2014-06-18 | BL3-ST-B2-1000 | 0d |  | MNHRS [937.28 h]; Cash Flow [80 h]; Excavation [12] | 80 |  | STR |  |  |  |
| BL3-ST-B2-1020 |  | Formwork | 10d | 2014-06-21 | 2014-07-02 | BL3-ST-B2-1000, BL3-ST-B2-1010 | 0d |  | MNHRS [5457.46 h]; Cash Flow [23993.4 h]; FW [770.5]; Excavation [10] | 23,993.37 |  | STR |  |  |  |
| BL3-ST-B2-1030 |  | Reinforcement | 18d | 2014-07-03 | 2014-08-05 | BL3-ST-B2-1020 | 0d |  | MNHRS [3429.96 h]; Cash Flow [229321 h]; Reinforcement [182001]; Excavation [18] | 229,321.26 |  | STR |  |  |  |
| BL3-ST-B2-1040 |  | MEP Works in Raft | 5d | 2014-07-31 | 2014-08-05 | ENGMEP8700, OFF-ENG-MEP-DR1090, BL3-ST-B2-1030 FF | 0d |  | Cash Flow [13051 h]; Plumber [312 h]; Excavation [5] | 13,051 |  |  | MEP | PL & D | B.W |
| BL3-ST-B2-1050 |  | Earthing Works | 5d | 2014-07-31 | 2014-08-05 | BL3-ST-B2-1040 SS, ENGMEP8700, ENGMEP8910, PROCMEPELE1810, BL3-ST-B2-1030 FF | 0d |  | Cash Flow [8362.29 h]; Electrician [408 h]; Excavation [5] | 8,362.29 |  |  | MEP | EL | B.W |
| BL3-ST-B2-1060 |  | Concrete | 1d | 2014-08-06 | 2014-08-06 | BL3-ST-B2-1030, BL3-ST-B2-1040, BL3-ST-B2-1050 | 0d |  | MNHRS [21500.5 h]; Cash Flow [363916 h]; Concrete [2636.5]; Excavation [1] | 363,916.09 |  | STR |  |  |  |

| ID | WBS | Activity | Duration | Start | Finish | Predecessors | Total float | Free float | Resources | Cost | Finishing | Responsibility | MEP Systems | MEP Steps | Fix |
| --- | --- | --- | --- | --- | --- | --- | --- | --- | --- | --- | --- | --- | --- | --- | --- |
|  | 2 | **Fiishing** |  | 2014-11-22 | 2015-12-04 |  |  |  |  |  |  |  |  |  |  |
| BL3-FN-B2-1000 |  | Block Works | 24d | 2014-11-22 | 2014-12-18 | BL3-ST-B1-1070 FS+12d, BL3-ST-GF-1070 | 41d | 0d | Cash Flow [7637.84 h]; MNHRS [574.5 h]; BW [150]; Excavation [24] | 7,637.84 | FIN |  |  |  |  |
| BL3-FN-B2-1010 |  | Plaster | 20d | 2014-12-20 | 2015-01-13 | BL3-FN-B2-1000, BL3-MEP-PL-B2-1010 FF+3d, BL3-MEP-PL-B2-1000 FF+3d, BL3-MEP-EL-B2-1010 FF+3d, BL3-MEP-EL-B2-1000 FF+3d | 42d | 0d | MNHRS [738.9 h]; Cash Flow [8684.33 h]; Plaster [246.3]; Excavation [20] | 8,684.33 | FIN |  |  |  |  |
| BL3-FN-B2-1020 |  | Paint 1st Coat | 15d | 2015-01-20 | 2015-02-05 | BL3-FN-B2-1010 FS+5d | 83d | 0d | MNHRS [151.8 h]; Cash Flow [916.43 h]; Painting [169]; Excavation [15] | 916.43 | FIN |  |  |  |  |
| BL3-FN-B2-1030 |  | Ceiling Paint | 10d | 2015-02-01 | 2015-02-11 | BL3-FN-B2-1020 SS+10d | 83d | 0d | MNHRS [39.6 h]; Cash Flow [238.95 h]; Painting [44]; Excavation [10] | 238.95 | FIN |  |  |  |  |
| BL3-FN-B2-1040 |  | Waterproofing | 5d | 2015-02-12 | 2015-02-17 | BL3-FN-B2-1030 | 239d | 0d | MNHRS [3.3 h]; Cash Flow [64.35 h]; Waterproofing [11]; Excavation [5] | 64.35 | FIN |  |  |  |  |
| BL3-FN-B2-1050 |  | Wall Tiling | 10d | 2015-02-12 | 2015-02-23 | BL3-FN-B2-1030 | 83d | 0d | MNHRS [776 h]; Cash Flow [3443.52 h]; Tiling [77.6]; Excavation [10] | 3,443.52 | FIN |  |  |  |  |
| BL3-FN-B2-1060 |  | Flooring Works | 20d | 2015-02-18 | 2015-03-12 | BL3-FN-B2-1040 | 239d | 0d | MNHRS [818 h]; Cash Flow [19061.8 h]; Tiling [124.5]; Excavation [20] | 19,061.75 | FIN |  |  |  |  |
| BL3-FN-B2-1070 |  | False Ceiling | 15d | 2015-02-24 | 2015-03-12 | BL3-FN-B2-1050, BL3-MEP-EL-B2-2040 FF+6d, BL3-MEP-PL-B2-2020 FF+6d, BL3-MEP-PL-B2-2040 FF+6d, BL3-MEP-AC-B2-2010 FF+6d, BL3-MEP-EL-B2-2020 FF+6d, BL3-MEP-EL-B2-2030 FF+6d, BL3-MEP-EL-B2-2000 FF+6d, BL3-MEP-EL-B2-2050 FF+6d, BL3-MEP-EL-B2-2010 FF+6d, BL3-MEP-FF-B2-2010 FF+6d, BL3-MEP-EL-B2-2060 FF+6d | 83d | 0d | Cash Flow [2015 h]; False Ceiling [48]; MNHRS [240 h]; Excavation [15] | 2,015 | FIN |  |  |  |  |
| BL3-FN-B2-1080 |  | Hand Rails for Stairs | 15d | 2015-03-14 | 2015-03-30 | BL3-FN-B2-1070 | 83d | 0d | Cash Flow [9483.79 h]; Metal Works & Handrail [20]; MNHRS [43 h]; Excavation [15] | 9,483.79 | FIN |  |  |  |  |
| BL3-FN-B2-1090 |  | Doors Installation | 15d | 2015-03-31 | 2015-04-16 | BL3-FN-B2-1080 | 83d | 0d | Cash Flow [21991.1 h]; Excavation [15] | 21,991.11 | FIN |  |  |  |  |
| BL3-FN-B2-1100 |  | Final Paint | 10d | 2015-11-25 | 2015-12-04 | BL3-FN-B2-1060, BL3-MEP-AC-B2-3000 FF+4d, BL3-MEP-EL-B2-3020 FF+4d, BL3-MEP-EL-B2-3030 FF+4d, BL3-MEP-EL-B2-3010 FF+4d, BL3-MEP-EL-B2-3050 FF+4d, BL3-MEP-PL-B2-3010 FF+4d, BL3-MEP-PL-B2-3020 FF+4d, BL3-MEP-FF-B2-3010 FF+4d, BL3-MEP-EL-B2-3060 FF+4d | 50d | 0d | Excavation [10] |  | FIN |  |  |  |  |
|  | 3 | **MEP Work** |  | 2014-11-25 | 2015-12-10 |  |  |  |  |  |  |  |  |  |  |
|  | 1 | **Mechanical System** |  | 2014-12-09 | 2015-11-30 |  |  |  |  |  |  |  |  |  |  |
|  | 2 | **HVAC Works** |  | 2014-12-09 | 2015-05-11 |  |  |  |  |  |  |  |  |  |  |
|  | 1 | **1st Fix** |  | 2014-12-09 | 2014-12-22 |  |  |  |  |  |  |  |  |  |  |
| BL3-MEP-AC-B2-1000 |  | Supports and Hungers Fixing | 12d | 2014-12-09 | 2014-12-22 | OFF-ENG-MEP-AC1130, OFF-PRO-MEP-DR1020, BL3-FN-B2-1000 SS+3d, BL3-FN-B2-1000 FF+3d | 43d | 1d | Cash Flow [118.11 h]; Ductman [192 h]; Excavation [12] | 118.11 |  | MEP | AC | 1st Fix | 1f |
|  | 3 | **2nd Fix** |  | 2014-12-24 | 2015-02-21 |  |  |  |  |  |  |  |  |  |  |
| BL3-MEP-AC-B2-2000 |  | Fresh Air Duct and Extract Duct Installation | 21d | 2014-12-24 | 2015-01-19 | BL3-MEP-AC-B2-1000, OFF-PRO-MEP-AC1020, BL3-FN-B2-1010 FF+5d | 42d | 13d | Cash Flow [2008.38 h]; Ductman [1008 h]; Excavation [21] | 2,008.38 |  | MEP | AC | 2nd Fix | 2f |
| BL3-MEP-AC-B2-2010 |  | Duct Accessories Installation | 14d | 2015-02-05 | 2015-02-21 | BL3-MEP-AC-B2-2000, OFF-PRO-MEP-AC1080, OFF-PRO-MEP-AC1110 | 94d | 6d | Cash Flow [236.17 h]; Pipe Fitter - CHW [448 h]; Excavation [14] | 236.17 |  | MEP | AC | 2nd Fix | 2f |
|  | 4 | **Final Fix** |  | 2015-04-30 | 2015-05-11 |  |  |  |  |  |  |  |  |  |  |
| BL3-MEP-AC-B2-3000 |  | Grills and Diffusers Fixing | 10d | 2015-04-30 | 2015-05-11 | BL3-MEP-AC-B2-2010, OFF-PRO-MEP-AC1140, BL3-FN-B2-1070 | 132d | 0d | Cash Flow [416.81 h]; Ductman [320 h]; Excavation [10] | 416.81 |  | MEP | AC | Final F | ff |
|  | 1 | **Plumbing and Drainage Works** |  | 2014-12-09 | 2015-05-07 |  |  |  |  |  |  |  |  |  |  |
|  | 1 | **1st Fix** |  | 2014-12-09 | 2014-12-22 |  |  |  |  |  |  |  |  |  |  |
| BL3-MEP-PL-B2-1000 |  | Low Level Water Supply Pipes Installation | 12d | 2014-12-09 | 2014-12-22 | OFF-ENG-MEP-WS1090, OFF-PRO-MEP-WS1050, BL3-FN-B2-1000 FF+3d, BL3-FN-B2-1000 SS+3d | 51d | 1d | Cash Flow [713.22 h]; Plumber [42 h]; Excavation [12] | 713.22 |  | MEP | PL & D | 1st Fix | 1f |
| BL3-MEP-PL-B2-1010 |  | Low Level Drainage Pipes Installation | 12d | 2014-12-09 | 2014-12-22 | OFF-ENG-MEP-DR1100, OFF-PRO-MEP-DR1050, BL3-FN-B2-1000 SS+3d, BL3-FN-B2-1000 FF+3d | 51d | 1d | Cash Flow [82.43 h]; Plumber [12.67 h]; Excavation [12] | 82.43 |  | MEP | PL & D | 1st Fix | 1f |
| BL3-MEP-PL-B2-1020 |  | Supports installation for High level Pipes | 12d | 2014-12-09 | 2014-12-22 | OFF-ENG-MEP-DR1100, OFF-ENG-MEP-WS1090, OFF-PRO-MEP-DR1020, BL3-FN-B2-1000 SS+3d, BL3-FN-B2-1000 FF+3d | 51d | 1d | Cash Flow [819.68 h]; Plumber [16.35 h]; Excavation [12] | 819.68 |  | MEP | PL & D | 1st Fix | 1f |

| ID | WBS | Activity | Duration | Start | Finish | Predecessors | Total float | Free float | Resources | Cost | Responsibility | MEP Systems | MEP Steps | Fix |
| --- | --- | --- | --- | --- | --- | --- | --- | --- | --- | --- | --- | --- | --- | --- |
|  | 3 | **2nd Fix** |  | 2014-12-24 | 2015-04-08 |  |  |  |  |  |  |  |  |  |
| BL3-MEP-PL-B2-2000 |  | High Level Water Supply Pipes and Fittings Installation | 21d | 2014-12-24 | 2015-01-19 | BL3-MEP-PL-B2-1020, BL3-MEP-PL-B2-1000, OFF-PRO-MEP-WS1020, OFF-PRO-MEP-WS1110, BL3-FN-B2-1010 FF+5d | 50d | 0d | Cash Flow [1308.6 h]; Plumber [150.02 h]; Excavation [21] | 1,308.6 | MEP | PL & D | 2nd Fix | 2f |
| BL3-MEP-PL-B2-2010 |  | High Level Drainage Pipes Installation | 21d | 2014-12-24 | 2015-01-19 | BL3-MEP-PL-B2-1020, BL3-MEP-PL-B2-1010, BL3-FN-B2-1010 FF+5d | 50d | 0d | Cash Flow [6562.53 h]; Plumber [244.38 h]; Excavation [21] | 6,562.53 | MEP | PL & D | 2nd Fix | 2f |
| BL3-MEP-PL-B2-2020 |  | Water Supply Pipes Pressure Test | 6d | 2015-01-20 | 2015-01-26 | BL3-MEP-PL-B2-2000, BL3-MEP-PL-B2-1000 | 116d | 28d | Cash Flow [145.74 h]; Plumber [48 h]; Excavation [6] | 145.74 | MEP | PL & D | 2nd Fix | 2f |
| BL3-MEP-PL-B2-2040 |  | Drainage Pipes Gravity Test | 6d | 2015-01-20 | 2015-01-26 | BL3-MEP-PL-B2-2010, BL3-MEP-PL-B2-1010 | 116d | 0d | Cash Flow [820.24 h]; Plumber [48 h]; Excavation [6] | 820.24 | MEP | PL & D | 2nd Fix | 2f |
| BL3-MEP-PL-B2-3000 |  | Manhole Covers Installation | 6d | 2015-01-27 | 2015-02-02 | BL3-MEP-PL-B2-2040 | 344d | 76d | Cash Flow [488.57 h]; Plumber [37.5 h]; Excavation [6] | 488.57 | MEP | PL & D | Final F | ff |
| BL3-MEP-PL-B2-2030 |  | Parking Drain Installation | 6d | 2015-03-14 | 2015-03-19 | OFF-ENG-MEP-DR1100, OFF-PRO-MEP-DR1050, BL3-FN-B2-1060 | 239d | 37d | Cash Flow [547.83 h]; Plumber [48 h]; Excavation [6] | 547.83 | MEP | PL & D | 1st Fix | 2f |
| BL3-MEP-PL-B2-2050 |  | Sump Pumps Installation Including Connection | 21d | 2015-03-16 | 2015-04-08 | BL3-MEP-PL-B2-2020, OFF-PRO-MEP-DR1130 | 289d | 283d | Cash Flow [2558.28 h]; Plumber [450 h]; Excavation [21] | 2,558.28 | MEP | PL & D | 2nd Fix | 2f |
|  | 4 | **Final Fix** |  | 2015-04-18 | 2015-05-07 |  |  |  |  |  |  |  |  |  |
| BL3-MEP-PL-B2-3010 |  | Sanitary Ware Installation Including Connection | 12d | 2015-04-18 | 2015-04-30 | BL3-MEP-PL-B2-2020, BL3-MEP-PL-B2-2040, OFF-PRO-MEP-WS1140, BL3-FN-B2-1070, BL3-FN-B2-1090 | 98d | 0d | Cash Flow [4439.52 h]; Plumber [383.86 h]; Excavation [12] | 4,439.52 | MEP | PL & D | Final F | ff |
| BL3-MEP-PL-B2-3020 |  | Sanitary Ware Accessories Installation | 6d | 2015-05-02 | 2015-05-07 | BL3-MEP-PL-B2-3010 | 192d | 36d | Cash Flow [160.22 h]; Plumber [36.45 h]; Excavation [6] | 160.22 | MEP | PL & D | Final F | ff |
|  | 3 | **Fire Fighting Works** |  | 2014-12-20 | 2015-11-30 |  |  |  |  |  |  |  |  |  |
|  | 1 | **1st Fix** |  | 2014-12-20 | 2015-01-18 |  |  |  |  |  |  |  |  |  |
| BL3-MEP-FF-B2-1000 |  | Supports and Hungers installation | 24d | 2014-12-20 | 2015-01-18 | OFF-ENG-MEP-FF1090, OFF-PRO-MEP-DR1020, BL3-FN-B2-1000 | 87d | 0d | Cash Flow [35.86 h]; Plumber [288 h]; Excavation [24] | 35.86 | MEP | FF | 1st Fix | 1f |
|  | 3 | **2nd Fix** |  | 2015-01-19 | 2015-02-18 |  |  |  |  |  |  |  |  |  |
| BL3-MEP-FF-B2-2000 |  | Fire Fighting Pipes and Fittings Installation | 21d | 2015-01-19 | 2015-02-11 | BL3-MEP-FF-B2-1000, OFF-PRO-MEP-FF1070, BL3-FN-B2-1010 FF+5d | 90d | 0d | Cash Flow [286.84 h]; Plumber [1008 h]; Excavation [21] | 286.84 | MEP | FF | 2nd Fix | 2f |
| BL3-MEP-FF-B2-2010 |  | Fire Fighting Pipes Pressure Test | 6d | 2015-02-12 | 2015-02-18 | BL3-MEP-FF-B2-2000 | 96d | 13d | Cash Flow [35.86 h]; Plumber [96 h]; Excavation [6] | 35.86 | MEP | FF | 2nd Fix | 2f |
|  | 4 | **Final Fix** |  | 2015-11-25 | 2015-11-30 |  |  |  |  |  |  |  |  |  |
| BL3-MEP-FF-B2-3010 |  | Hose reel Cabinet Installation and Connection | 6d | 2015-11-25 | 2015-11-30 | BL3-MEP-FF-B2-2010, BL3-FN-B2-1050, BL3-FN-B2-1070, BL3-MEP-RZR-140 | 6d | 0d | Cash Flow [1330.85 h]; Plumber [192 h]; Excavation [6] | 1,330.85 | MEP | FF | Final F | ff |
| BL3-MEP-FF-B2-3000 |  | Fire Extinguisher Installation | 2d | 2015-11-26 | 2015-11-27 | BL3-MEP-FF-B2-2010, BL3-FN-B2-1050, BL3-FN-B2-1100 SS+1d | 50d | 4d | Cash Flow [1074.99 h]; Plumber [8 h]; Excavation [2] | 1,074.99 | MEP | FF | Final F | ff |
|  | 3 | **Electrical System** |  | 2014-11-25 | 2015-12-10 |  |  |  |  |  |  |  |  |  |
|  | 1 | **1st Fix** |  | 2014-11-25 | 2014-12-22 |  |  |  |  |  |  |  |  |  |
| BL3-MEP-EL-B2-1000 |  | PVC Back Boxes and Conduits Fixing in Wall | 24d | 2014-11-25 | 2014-12-22 | ENGMEP8620, ENGMEP8810, ENGMEP9030, ENGMEP9190, ENGMEP9470, ENGMEP9610, PROCMEPELE1990, PROCMEPELE2080, BL3-FN-B2-1000 SS+3d, BL3-FN-B2-1000 FF+3d | 41d | 10d | Cash Flow [3307.67 h]; Electrician [384 h]; Excavation [24] | 3,307.67 | MEP | EL | 1st Fix | 1f |
| BL3-MEP-EL-B2-1010 |  | DB's Inclosure Fixing | 6d | 2014-12-16 | 2014-12-22 | ENGMEP8620, ENGMEP8810, BL3-FN-B2-1000 SS+3d, BL3-FN-B2-1000 FF+3d | 56d | 14d | Cash Flow [2130.4 h]; Electrician [96 h]; Excavation [6] | 2,130.4 | MEP | EL | 1st Fix | 1f |

| ID | WBS | Activity | Duration | Start | Finish | Predecessors | Total float | Free float | Resources | Cost | Responsibility | MEP Systems | MEP Steps | Fix | Structural |
| --- | --- | --- | --- | --- | --- | --- | --- | --- | --- | --- | --- | --- | --- | --- | --- |
|  | 2 | **2nd Fix** |  | 2014-12-24 | 2015-03-08 |  |  |  |  |  |  |  |  |  |  |
| BL3-MEP-EL-B2-2000 |  | Cable Tray and Trunking Installation | 21d | 2014-12-24 | 2015-01-19 | PROCMEPELE3340, BL3-FN-B2-1010 FF+5d | 116d | 13d | Cash Flow [9064.45 h]; Electrician [336 h]; Excavation [21] | 9,064.45 | MEP | EL | 2nd Fix | 2f |  |
| BL3-MEP-EL-B2-2010 |  | Fire Alarm System Wiring | 12d | 2015-01-06 | 2015-01-19 | BL3-MEP-EL-B2-1000, PROCMEPELE8650, BL3-FN-B2-1010 FF+5d | 122d | 22d | Cash Flow [7111.01 h]; Electrician [192 h]; Excavation [12] | 7,111.01 | MEP | EL | 2nd Fix | 2f |  |
| BL3-MEP-EL-B2-2020 |  | Lighting Wiring | 12d | 2015-01-06 | 2015-01-19 | BL3-MEP-EL-B2-1000, PROCMEPELE5680, BL3-FN-B2-1010 FF+5d | 122d | 22d | Cash Flow [3566.08 h]; Electrician [241.71 h]; Excavation [12] | 3,566.08 | MEP | EL | 2nd Fix | 2f |  |
| BL3-MEP-EL-B2-2030 |  | Power Points Wiring | 12d | 2015-01-06 | 2015-01-19 | BL3-MEP-EL-B2-1000, PROCMEPELE5680, BL3-FN-B2-1010 FF+5d | 122d | 22d | Cash Flow [2894.21 h]; Electrician [192 h]; Excavation [12] | 2,894.21 | MEP | EL | 2nd Fix | 2f |  |
| BL3-MEP-EL-B2-2040 |  | BMS System Wiring | 8d | 2015-01-11 | 2015-01-19 | BL3-MEP-EL-B2-1000, PROCMEPELE9100, BL3-FN-B2-1010 FF+5d | 122d | 26d | Cash Flow [15183.4 h]; Electrician [186 h]; Excavation [8] | 15,183.44 | MEP | EL | 2nd Fix | 2f |  |
| BL3-MEP-EL-B2-2050 |  | Emergency Light Wiring | 8d | 2015-01-11 | 2015-01-19 | BL3-MEP-EL-B2-1000, PROCMEPELE9330, BL3-FN-B2-1010 FF+5d | 122d | 26d | Cash Flow [1202.03 h]; Electrician [128 h]; Excavation [8] | 1,202.03 | MEP | EL | 2nd Fix | 2f |  |
| BL3-MEP-EL-B2-2060 |  | DB's Installation and Termination | 12d | 2015-02-07 | 2015-02-19 | BL3-MEP-EL-B2-1010, PROCMEPELE8920, BL3-FN-B2-1020 | 95d | 0d | Cash Flow [4970.93 h]; Electrician [288 h]; Excavation [12] | 4,970.93 | MEP | EL | 2nd Fix | 2f |  |
| BL3-MEP-EL-B2-2070 |  | SMDB's Installation | 6d | 2015-02-07 | 2015-02-12 | BL3-MEP-EL-B2-1000, PROCMEPELE9380, PROCMEPELE4780, PROCMEPELE7660, BL3-FN-B2-1020 | 104d | 24d | Cash Flow [4970.93 h]; Electrician [48 h]; Excavation [6] | 4,970.93 | MEP | EL | 2nd Fix | 2f |  |
| BL3-MEP-EL-B2-3040 |  | Power Cable Puling | 14d | 2015-02-21 | 2015-03-08 | BL3-MEP-EL-B2-2000, BL3-MEP-EL-B2-2020, BL3-MEP-EL-B2-2030, BL3-MEP-EL-B2-2060 | 144d | 4d | Cash Flow [13632.3 h]; Electrician [168 h]; Excavation [14] | 13,632.33 | MEP | EL | 2nd Fix | 2f |  |
|  | 3 | **Final Fix** |  | 2015-03-14 | 2015-12-10 |  |  |  |  |  |  |  |  |  |  |
| BL3-MEP-EL-B2-3010 |  | Fire Alarm System Detector Installation | 12d | 2015-03-14 | 2015-03-26 | BL3-MEP-EL-B2-2010, BL3-FN-B2-1070 | 160d | 30d | Cash Flow [4034.38 h]; Electrician [192 h]; Excavation [12] | 4,034.38 | MEP | EL | Final F | ff |  |
| BL3-MEP-EL-B2-3020 |  | Lights Fitting Fixing | 14d | 2015-03-14 | 2015-03-29 | BL3-MEP-EL-B2-2020, PROCMEPELE8560, BL3-FN-B2-1070 | 132d | 28d | Cash Flow [7322.66 h]; Electrician [244 h]; Excavation [14] | 7,322.66 | MEP | EL | Final F | ff |  |
| BL3-MEP-EL-B2-3030 |  | Emergency Light Fixing | 8d | 2015-03-14 | 2015-03-22 | BL3-MEP-EL-B2-2050, BL3-FN-B2-1070 | 221d | 34d | Cash Flow [5714.02 h]; Electrician [128 h]; Excavation [8] | 5,714.02 | MEP | EL | Final F | ff |  |
| BL3-MEP-EL-B2-3060 |  | SMDB's Termination and Final Connection | 6d | 2015-03-14 | 2015-03-19 | BL3-MEP-EL-B2-2070, BL3-MEP-EL-B2-2030, BL3-MEP-EL-B2-3040, BL3-FN-B2-1070 | 237d | 36d | Cash Flow [2785.83 h]; Electrician [192 h]; Excavation [6] | 2,785.82 | MEP | EL | Final F | ff |  |
| BL3-MEP-EL-B2-3050 |  | Sockets and Switches Fixing | 8d | 2015-03-26 | 2015-04-04 | BL3-MEP-EL-B2-2030, PROCMEPELE8830, BL3-FN-B2-1070 | 205d | 23d | Cash Flow [1166.96 h]; Electrician [128 h]; Excavation [8] | 1,166.96 | MEP | EL | Final F | ff |  |
| BL3-MEP-EL-B2-3000 |  | CO2 System Installation | 6d | 2015-12-05 | 2015-12-10 | BL3-MEP-EL-B2-1000, BL3-FN-B2-1030, BL3-FN-B2-1100, BL2-MEP-EL-B1-3000 | 57d | 0d | Cash Flow [21027.8 h]; Electrician [179.65 h]; Excavation [6] | 21,027.76 | MEP | EL | Final F | ff |  |
|  | 2 | **Basement 1** |  | 2014-08-07 | 2015-12-16 |  |  |  |  |  |  |  |  |  |  |
|  | 1 | **Structural** |  | 2014-08-07 | 2014-09-24 |  |  |  |  |  |  |  |  |  |  |
| BL3-ST-B1-1000 |  | Reinforcement for Verticals | 12d | 2014-08-07 | 2014-08-20 | ENG-STR-BL3-APP100, ENG-STR-BL3-APP110, ENG-STR-BL3-APP120, BL3-ST-B2-1060 | 0d |  | MNHRS [946.62 h]; Cash Flow [63289.8 h]; Reinforcement [50230]; Excavation [12] | 63,289.8 |  |  |  |  | STR |
| BL3-ST-B1-1010 |  | MEP Works in Vertical Element | 5d | 2014-08-16 | 2014-08-20 | ENGMEP8620, BL3-ST-B1-1000 FF | 8d |  | Cash Flow [1798.55 h]; Electrician [160 h]; Excavation [5] | 1,798.55 | MEP | EL | B.W |  |  |
| BL3-ST-B1-1020 |  | FW for Verticals | 8d | 2014-08-21 | 2014-08-30 | BL3-ST-B1-1000 | 0d |  | MNHRS [7676.56 h]; Cash Flow [33749.5 h]; Excavation [8] | 33,749.53 |  |  |  |  | STR |
| BL3-ST-B1-1030 |  | Concrete Verticals | 1d | 2014-08-31 | 2014-08-31 | BL3-ST-B1-1020, BL3-ST-B1-1010 | 0d |  | MNHRS [1446.69 h]; Cash Flow [24486.5 h]; Concrete [177.4]; Excavation [1] | 24,486.52 |  |  |  |  | STR |
| BL3-ST-B1-1040 |  | FW for Slab | 10d | 2014-09-01 | 2014-09-11 | BL3-ST-B1-1030 | 0d |  | MNHRS [11653.2 h]; Cash Flow [51232.8 h]; Excavation [10] | 51,232.77 |  |  |  |  | STR |
| BL3-ST-B1-1050 |  | Reinforcement for Slab | 10d | 2014-09-13 | 2014-09-23 | BL3-ST-B1-1040 | 0d |  | MNHRS [949.94 h]; Cash Flow [63511.6 h]; Reinforcement [50406]; Excavation [10] | 63,511.56 |  |  |  |  | STR |
| BL3-ST-B1-1060 |  | MEP Works in Slab & Beams | 5d | 2014-09-18 | 2014-09-23 | ENGMEP8620, BL3-ST-B1-1050 FF | 0d |  | Cash Flow [3349.02 h]; Electrician [320 h]; Excavation [5] | 3,349.02 | MEP | EL | B.W |  |  |
| BL3-ST-B1-1070 |  | Concrete for Slab | 1d | 2014-09-24 | 2014-09-24 | BL3-ST-B1-1050, BL3-ST-B1-1060 | 0d |  | MNHRS [3611.02 h]; Cash Flow [61119.7 h]; Concrete [442.8]; Excavation [1] | 61,119.68 |  |  |  |  | STR |

| ID | WBS | Activity | Duration | Start | Finish | Predecessors | Total float | Free float | Resources | Cost | Finishing | Responsibility | MEP Systems | MEP Steps | Fix |
| --- | --- | --- | --- | --- | --- | --- | --- | --- | --- | --- | --- | --- | --- | --- | --- |
|  | 2 | **Fiishing** |  | 2014-12-31 | 2015-12-10 |  |  |  |  |  |  |  |  |  |  |
| BL3-FN-B1-1000 |  | Block Works | 24d | 2014-12-31 | 2015-01-29 | BL3-ST-GF-1070 FS+12d, BL3-ST-1F-1070 | 19d | 0d | Cash Flow [7637.84 h]; MNHRS [574.5 h]; BW [150]; Excavation [24] | 7,637.84 | FIN |  |  |  |  |
| BL3-FN-B1-1010 |  | Plaster | 20d | 2015-01-31 | 2015-02-22 | BL3-FN-B1-1000, BL3-MEP-PL-B1-1010 FF+3d, BL3-MEP-PL-B1-1000 FF+3d, BL3-MEP-EL-B1-1010 FF+3d, BL3-MEP-EL-B1-1000 FF+3d | 29d | 0d | MNHRS [738.9 h]; Cash Flow [8684.33 h]; Plaster [246.3]; Excavation [20] | 8,684.33 | FIN |  |  |  |  |
| BL3-FN-B1-1020 |  | Paint 1st Coat | 15d | 2015-03-07 | 2015-03-23 | BL3-FN-B1-1010 FS+10d | 56d | 0d | MNHRS [151.8 h]; Cash Flow [916.43 h]; Painting [169]; Excavation [15] | 916.43 | FIN |  |  |  |  |
| BL3-FN-B1-1030 |  | Ceiling Paint | 10d | 2015-03-18 | 2015-03-29 | BL3-FN-B1-1020 SS+10d | 56d | 0d | MNHRS [39.6 h]; Cash Flow [238.95 h]; Painting [44]; Excavation [10] | 238.95 | FIN |  |  |  |  |
| BL3-FN-B1-1040 |  | Waterproofing | 5d | 2015-03-30 | 2015-04-04 | BL3-FN-B1-1030 | 97d | 0d | MNHRS [3.3 h]; Cash Flow [64.35 h]; Waterproofing [11]; Excavation [5] | 64.35 | FIN |  |  |  |  |
| BL3-FN-B1-1050 |  | Wall Tiling | 10d | 2015-03-30 | 2015-04-09 | BL3-FN-B1-1030 | 56d | 0d | MNHRS [776 h]; Cash Flow [3443.52 h]; Tiling [77.6]; Excavation [10] | 3,443.52 | FIN |  |  |  |  |
| BL3-FN-B1-1060 |  | Flooring Works | 24d | 2015-04-05 | 2015-05-02 | BL3-FN-B1-1040 | 97d | 0d | MNHRS [818 h]; Cash Flow [19061.8 h]; Tiling [124.5]; Excavation [24] | 19,061.75 | FIN |  |  |  |  |
| BL3-FN-B1-1070 |  | False Ceiling | 18d | 2015-04-11 | 2015-04-30 | BL3-FN-B1-1050, BL3-MEP-EL-B1-2040 FF+6d, BL3-MEP-PL-B1-2020 FF+6d, BL3-MEP-PL-B1-2040 FF+6d, BL3-MEP-AC-B1-2010 FF+6d, BL3-MEP-EL-B1-2020 FF+6d, BL3-MEP-EL-B1-2030 FF+6d, BL3-MEP-EL-B1-2050 FF+6d, BL3-MEP-EL-B1-2000 FF+6d, BL3-MEP-EL-B1-2010 FF+6d, BL3-MEP-FF-B1-2010 FF+6d, BL3-MEP-EL-B1-2070 FF+6d, BL3-MEP-EL-B1-2060 FF+6d | 56d | 0d | Cash Flow [2013.82 h]; False Ceiling [48]; MNHRS [240 h]; Excavation [18] | 2,013.82 | FIN |  |  |  |  |
| BL3-FN-B1-1080 |  | Hand Rails for Stairs | 15d | 2015-05-02 | 2015-05-18 | BL3-FN-B1-1070 | 56d | 0d | Cash Flow [9483.79 h]; Metal Works & Handrail [20]; MNHRS [43 h]; Excavation [15] | 9,483.79 | FIN |  |  |  |  |
| BL3-FN-B1-1090 |  | Doors Installation | 15d | 2015-05-19 | 2015-06-04 | BL3-FN-B1-1080, BL3-FN-B2-1090 | 56d | 0d | Cash Flow [21991.1 h]; Excavation [15] | 21,991.11 | FIN |  |  |  |  |
| BL3-FN-B1-1100 |  | Final Paint | 10d | 2015-12-01 | 2015-12-10 | BL3-FN-B1-1060, BL3-MEP-AC-B1-3000 FF+4d, BL3-MEP-EL-B1-3000 FF+4d, BL3-MEP-EL-B1-3010 FF+4d, BL3-MEP-EL-B1-3030 FF+4d, BL3-MEP-EL-B1-3050 FF+4d, BL3-MEP-PL-B1-3010 FF+4d, BL3-MEP-PL-B1-3020 FF+4d, BL3-MEP-FF-B1-3010 FF+4d | 46d | 0d | Excavation [10] |  | FIN |  |  |  |  |
|  | 3 | **MEP Work** |  | 2015-01-20 | 2015-12-16 |  |  |  |  |  |  |  |  |  |  |
|  | 1 | **Mechanical System** |  | 2015-01-20 | 2015-12-06 |  |  |  |  |  |  |  |  |  |  |
|  | 2 | **HVAC Works** |  | 2015-01-20 | 2015-05-23 |  |  |  |  |  |  |  |  |  |  |
|  | 1 | **1st Fix** |  | 2015-01-20 | 2015-02-02 |  |  |  |  |  |  |  |  |  |  |
| BL3-MEP-AC-B1-1000 |  | Supports and Hungers Fixing | 12d | 2015-01-20 | 2015-02-02 | BL3-MEP-AC-B2-1000, OFF-ENG-MEP-AC1140, BL3-FN-B1-1000 SS+3d, BL3-FN-B1-1000 FF+3d | 30d | 1d | Cash Flow [118.11 h]; Ductman [192 h]; Excavation [12] | 118.11 |  | MEP | AC | 1st Fix | 1f |
|  | 3 | **2nd Fix** |  | 2015-02-04 | 2015-03-16 |  |  |  |  |  |  |  |  |  |  |
| BL3-MEP-AC-B1-2000 |  | Fresh Air Duct and Extract Duct Installation | 21d | 2015-02-04 | 2015-02-28 | BL3-MEP-AC-B1-1000, BL3-MEP-AC-B2-2000, BL3-FN-B1-1010 FF+5d | 29d | 0d | Cash Flow [2008.38 h]; Ductman [1008 h]; Excavation [21] | 2,008.38 |  | MEP | AC | 2nd Fix | 2f |
| BL3-MEP-AC-B1-2010 |  | Duct Accessories Installation | 14d | 2015-03-01 | 2015-03-16 | BL3-MEP-AC-B1-1000, BL3-MEP-AC-B1-2000, BL3-MEP-AC-B2-2010 | 89d | 21d | Cash Flow [236.17 h]; Pipe Fitter - CHW [448 h]; Excavation [14] | 236.17 |  | MEP | AC | 2nd Fix | 2f |
|  | 4 | **Final Fix** |  | 2015-05-12 | 2015-05-23 |  |  |  |  |  |  |  |  |  |  |
| BL3-MEP-AC-B1-3000 |  | Grills and Diffusers Fixing | 10d | 2015-05-12 | 2015-05-23 | BL3-MEP-AC-B1-2010, BL3-MEP-AC-B2-3000, BL3-FN-B1-1070 | 132d | 13d | Cash Flow [416.81 h]; Ductman [320 h]; Excavation [10] | 416.81 |  | MEP | AC | Final F | ff |
|  | 1 | **Plumbing and Drainage Works** |  | 2015-01-20 | 2015-06-22 |  |  |  |  |  |  |  |  |  |  |
|  | 1 | **1st Fix** |  | 2015-01-20 | 2015-02-02 |  |  |  |  |  |  |  |  |  |  |
| BL3-MEP-PL-B1-1000 |  | Low Level Water Supply Pipes Installation | 12d | 2015-01-20 | 2015-02-02 | BL3-MEP-PL-B2-1000, OFF-ENG-MEP-WS1100, BL3-FN-B1-1000 SS+3d, BL3-FN-B1-1000 FF+3d | 38d | 1d | Cash Flow [713.22 h]; Plumber [42 h]; Excavation [12] | 713.22 |  | MEP | PL & D | 1st Fix | 1f |
| BL3-MEP-PL-B1-1010 |  | Low Level Drainage Pipes Installation | 12d | 2015-01-20 | 2015-02-02 | BL3-MEP-PL-B2-1010, OFF-ENG-MEP-DR1110, BL3-FN-B1-1000 SS+3d, BL3-FN-B1-1000 FF+3d | 38d | 1d | Cash Flow [82.43 h]; Plumber [12.67 h]; Excavation [12] | 82.43 |  | MEP | PL & D | 1st Fix | 1f |
| BL3-MEP-PL-B1-1020 |  | Supports installation for High level Pipes | 12d | 2015-01-20 | 2015-02-02 | BL3-MEP-PL-B2-1020, OFF-ENG-MEP-DR1110, OFF-ENG-MEP-WS1100, BL3-FN-B1-1000 SS+3d, BL3-FN-B1-1000 FF+3d | 38d | 1d | Cash Flow [819.68 h]; Plumber [16.35 h]; Excavation [12] | 819.68 |  | MEP | PL & D | 1st Fix | 1f |

| ID | WBS | Activity | Duration | Start | Finish | Predecessors | Total float | Free float | Resources | Cost | Responsibility | MEP Systems | MEP Steps | Fix |
| --- | --- | --- | --- | --- | --- | --- | --- | --- | --- | --- | --- | --- | --- | --- |
|  | 3 | **2nd Fix** |  | 2015-02-04 | 2015-05-09 |  |  |  |  |  |  |  |  |  |
| BL3-MEP-PL-B1-2000 |  | High Level Water Supply Pipes and Fittings Installation | 21d | 2015-02-04 | 2015-02-28 | BL3-MEP-PL-B1-1020, BL3-MEP-PL-B1-1000, BL3-MEP-PL-B2-2000, BL3-FN-B1-1010 FF+5d | 37d | 0d | Cash Flow [1308.6 h]; Plumber [150.02 h]; Excavation [21] | 1,308.6 | MEP | PL & D | 2nd Fix | 2f |
| BL3-MEP-PL-B1-2010 |  | High Level Drainage Pipes Installation | 21d | 2015-02-04 | 2015-02-28 | BL3-MEP-PL-B1-1020, BL3-MEP-PL-B1-1010, BL3-MEP-PL-B2-2010, BL3-FN-B1-1010 FF+5d | 37d | 0d | Cash Flow [6562.53 h]; Plumber [244.38 h]; Excavation [21] | 6,562.53 | MEP | PL & D | 2nd Fix | 2f |
| BL3-MEP-PL-B1-2020 |  | Water Supply Pipes Pressure Test | 6d | 2015-03-01 | 2015-03-07 | BL3-MEP-PL-B1-2000, BL3-MEP-PL-B1-1000, BL3-MEP-PL-B2-2020 | 97d | 29d | Cash Flow [145.74 h]; Plumber [48 h]; Excavation [6] | 145.74 | MEP | PL & D | 2nd Fix | 2f |
| BL3-MEP-PL-B1-2040 |  | Drainage Pipes Gravity Test | 6d | 2015-03-01 | 2015-03-07 | BL3-MEP-PL-B1-2010, BL3-MEP-PL-B1-1010, BL3-MEP-PL-B2-2040 | 97d | 29d | Cash Flow [820.24 h]; Plumber [48 h]; Excavation [6] | 820.24 | MEP | PL & D | 2nd Fix | 2f |
| BL3-MEP-PL-B1-2030 |  | Parking Drain Installation | 6d | 2015-05-03 | 2015-05-09 | BL3-MEP-PL-B2-2030, OFF-ENG-MEP-DR1110, BL3-FN-B1-1060 | 202d | 25d | Cash Flow [547.83 h]; Plumber [48 h]; Excavation [6] | 547.83 | MEP | PL & D | 1st Fix | 2f |
| BL3-MEP-PL-B1-3000 |  | Manhole Covers Installation | 6d | 2015-05-03 | 2015-05-09 | BL3-MEP-PL-B1-2040, BL3-MEP-PL-B2-3000, BL3-FN-B1-1060 | 268d | 257d | Cash Flow [488.57 h]; Plumber [37.5 h]; Excavation [6] | 488.57 | MEP | PL & D | Final F | ff |
|  | 4 | **Final Fix** |  | 2015-06-05 | 2015-06-22 |  |  |  |  |  |  |  |  |  |
| BL3-MEP-PL-B1-3010 |  | Sanitary Ware Installation Including Connection | 12d | 2015-06-05 | 2015-06-16 | BL3-MEP-PL-B1-2020, BL3-MEP-PL-B1-2040, BL3-MEP-PL-B2-3010, BL3-FN-B1-1060, BL3-FN-B1-1050, BL3-FN-B1-1070, BL3-FN-B1-1090 | 68d | 0d | Cash Flow [4439.52 h]; Plumber [383.86 h]; Excavation [12] | 4,439.52 | MEP | PL & D | Final F | ff |
| BL3-MEP-PL-B1-3020 |  | Sanitary Ware Accessories Installation | 6d | 2015-06-17 | 2015-06-22 | BL3-MEP-PL-B1-3010, BL3-MEP-PL-B2-3020 | 156d | 28d | Cash Flow [160.22 h]; Plumber [36.45 h]; Excavation [6] | 160.22 | MEP | PL & D | Final F | ff |
|  | 3 | **Fire Fighting Works** |  | 2015-01-31 | 2015-12-06 |  |  |  |  |  |  |  |  |  |
|  | 1 | **1st Fix** |  | 2015-01-31 | 2015-02-26 |  |  |  |  |  |  |  |  |  |
| BL3-MEP-FF-B1-1000 |  | Supports and Hungers installation | 24d | 2015-01-31 | 2015-02-26 | BL3-MEP-FF-B2-1000, OFF-ENG-MEP-FF1100, BL3-FN-B1-1000 | 77d | 0d | Cash Flow [35.86 h]; Plumber [288 h]; Excavation [24] | 35.86 | MEP | FF | 1st Fix | 1f |
|  | 3 | **2nd Fix** |  | 2015-02-28 | 2015-03-30 |  |  |  |  |  |  |  |  |  |
| BL3-MEP-FF-B1-2000 |  | Fire Fighting Pipes and Fittings Installation | 21d | 2015-02-28 | 2015-03-23 | BL3-MEP-FF-B1-1000, BL3-MEP-FF-B2-2000, BL3-FN-B1-1010 FF+5d | 77d | 0d | Cash Flow [286.84 h]; Plumber [1008 h]; Excavation [21] | 286.84 | MEP | FF | 2nd Fix | 2f |
| BL3-MEP-FF-B1-2010 |  | Fire Fighting Pipes Pressure Test | 6d | 2015-03-24 | 2015-03-30 | BL3-MEP-FF-B1-2000 | 77d | 21d | Cash Flow [35.86 h]; Plumber [96 h]; Excavation [6] | 35.86 | MEP | FF | 2nd Fix | 2f |
|  | 4 | **Final Fix** |  | 2015-12-01 | 2015-12-06 |  |  |  |  |  |  |  |  |  |
| BL3-MEP-FF-B1-3010 |  | Hose reel Cabinet Installation and Connection | 6d | 2015-12-01 | 2015-12-06 | BL3-MEP-FF-B1-2010, BL3-MEP-FF-B2-3010, BL3-FN-B1-1050, BL3-FN-B1-1070 | 6d | 0d | Cash Flow [1330.85 h]; Plumber [192 h]; Excavation [6] | 1,330.85 | MEP | FF | Final F | ff |
| BL3-MEP-FF-B1-3000 |  | Fire Extinguisher Installation | 2d | 2015-12-02 | 2015-12-03 | BL3-MEP-FF-B1-2010, BL3-MEP-FF-B2-3000, BL3-FN-B1-1050, BL3-FN-B1-1100 SS+1d | 46d | 4d | Cash Flow [1074.99 h]; Plumber [8 h]; Excavation [2] | 1,074.99 | MEP | FF | Final F | ff |
|  | 3 | **Electrical System** |  | 2015-01-20 | 2015-12-16 |  |  |  |  |  |  |  |  |  |
|  | 1 | **1st Fix** |  | 2015-01-20 | 2015-02-02 |  |  |  |  |  |  |  |  |  |
| BL3-MEP-EL-B1-1000 |  | PVC Back Boxes and Conduits Fixing in Wall | 12d | 2015-01-20 | 2015-02-02 | ENGMEP9620, ENGMEP9480, ENGMEP9200, ENGMEP9040, ENGMEP8820, ENGMEP8620, PROCMEPELE1990, PROCMEPELE2080, BL3-FN-B1-1000 SS+3d, BL3-FN-B1-1000 FF+3d, BL3-MEP-EL-B2-1000 | 19d | 10d | Cash Flow [3307.67 h]; Electrician [384 h]; Excavation [12] | 3,307.67 | MEP | EL | 1st Fix | 1f |
| BL3-MEP-EL-B1-1010 |  | DB's Inclosure Fixing | 6d | 2015-01-27 | 2015-02-02 | ENGMEP8820, ENGMEP8620, BL3-FN-B1-1000 SS+3d, BL3-MEP-EL-B2-1010, BL3-FN-B1-1000 FF+3d | 43d | 14d | Cash Flow [2130.4 h]; Electrician [96 h]; Excavation [6] | 2,130.4 | MEP | EL | 1st Fix | 1f |
|  | 2 | **2nd Fix** |  | 2015-02-04 | 2015-04-22 |  |  |  |  |  |  |  |  |  |
| BL3-MEP-EL-B1-2000 |  | Cable Tray and Trunking Installation | 21d | 2015-02-04 | 2015-02-28 | PROCMEPELE3340, BL3-FN-B1-1010 FF+5d, BL3-MEP-EL-B2-2000 | 103d | 21d | Cash Flow [9064.45 h]; Electrician [336 h]; Excavation [21] | 9,064.45 | MEP | EL | 2nd Fix | 2f |
| BL3-MEP-EL-B1-2010 |  | Fire Alarm System Wiring | 12d | 2015-02-15 | 2015-02-28 | BL3-MEP-EL-B1-1000, PROCMEPELE8650, BL3-FN-B1-1010 FF+5d, BL3-MEP-EL-B2-2010 | 103d | 23d | Cash Flow [7111.01 h]; Electrician [192 h]; Excavation [12] | 7,111.01 | MEP | EL | 2nd Fix | 2f |
| BL3-MEP-EL-B1-2020 |  | Lighting Wiring | 12d | 2015-02-15 | 2015-02-28 | BL3-MEP-EL-B1-1000, PROCMEPELE5680, BL3-FN-B1-1010 FF+5d, BL3-MEP-EL-B2-2020 | 103d | 23d | Cash Flow [3566.08 h]; Electrician [241.71 h]; Excavation [12] | 3,566.08 | MEP | EL | 2nd Fix | 2f |
| BL3-MEP-EL-B1-2030 |  | Power Points Wiring | 12d | 2015-02-15 | 2015-02-28 | BL3-MEP-EL-B1-1000, PROCMEPELE5680, BL3-FN-B1-1010 FF+5d, BL3-MEP-EL-B2-2030 | 103d | 23d | Cash Flow [2894.21 h]; Electrician [192 h]; Excavation [12] | 2,894.21 | MEP | EL | 2nd Fix | 2f |
| BL3-MEP-EL-B1-2040 |  | BMS System Wiring | 8d | 2015-02-19 | 2015-02-28 | BL3-MEP-EL-B1-1000, PROCMEPELE9100, BL3-FN-B1-1010 FF+5d, BL3-MEP-EL-B2-2040 | 103d | 47d | Cash Flow [15183.4 h]; Electrician [186 h]; Excavation [8] | 15,183.44 | MEP | EL | 2nd Fix | 2f |
| BL3-MEP-EL-B1-2050 |  | Emergency Light Wiring | 8d | 2015-02-19 | 2015-02-28 | BL3-MEP-EL-B1-1000, PROCMEPELE9330, BL3-FN-B1-1010 FF+5d, BL3-MEP-EL-B2-2050 | 103d | 27d | Cash Flow [1202.03 h]; Electrician [128 h]; Excavation [8] | 1,202.03 | MEP | EL | 2nd Fix | 2f |
| BL3-MEP-EL-B1-2060 |  | DB's Installation and Termination | 12d | 2015-03-24 | 2015-04-06 | BL3-MEP-EL-B1-1010, BL3-MEP-EL-B2-2060, BL3-FN-B1-1020 | 71d | 0d | Cash Flow [4970.93 h]; Electrician [288 h]; Excavation [12] | 4,970.93 | MEP | EL | 2nd Fix | 2f |
| BL3-MEP-EL-B1-2070 |  | SMDB's , MDB's Installation | 12d | 2015-03-24 | 2015-04-06 | BL3-MEP-EL-B1-1000, PROCMEPELE9190, BL3-FN-B1-1020, BL3-MEP-EL-B2-2070 | 71d | 15d | Cash Flow [4196.6 h]; Electrician [336 h]; Excavation [12] | 4,196.6 | MEP | EL | 2nd Fix | 2f |
| BL3-MEP-EL-B1-3040 |  | Power Cable Puling | 14d | 2015-04-07 | 2015-04-22 | BL3-MEP-EL-B1-2000, BL3-MEP-EL-B1-2020, BL3-MEP-EL-B1-2030, BL3-MEP-EL-B1-2060, BL3-MEP-EL-B2-3040 | 119d | 7d | Cash Flow [13632.3 h]; Electrician [168 h]; Excavation [14] | 13,632.33 | MEP | EL | 2nd Fix | 2f |

| ID | WBS | Activity | Duration | Start | Finish | Predecessors | Total float | Free float | Resources | Cost | Responsibility | MEP Systems | MEP Steps | Fix | Structural | Finishing |
| --- | --- | --- | --- | --- | --- | --- | --- | --- | --- | --- | --- | --- | --- | --- | --- | --- |
|  | 3 | **Final Fix** |  | 2015-05-02 | 2015-12-16 |  |  |  |  |  |  |  |  |  |  |  |
| BL3-MEP-EL-B1-3000 |  | Lights Fitting Fixing | 14d | 2015-05-02 | 2015-05-17 | BL3-MEP-EL-B1-2020, PROCMEPELE8560, BL3-FN-B1-1070, BL3-MEP-EL-B2-3020 | 104d | 18d | Cash Flow [7322.66 h]; Electrician [244 h]; Excavation [14] | 7,322.66 | MEP | EL | Final F | ff |  |  |
| BL3-MEP-EL-B1-3010 |  | Emergency Light Fixing | 8d | 2015-05-02 | 2015-05-10 | BL3-MEP-EL-B1-2050, BL3-FN-B1-1070, BL3-MEP-EL-B2-3030 | 187d | 24d | Cash Flow [5714.02 h]; Electrician [128 h]; Excavation [8] | 5,714.02 | MEP | EL | Final F | ff |  |  |
| BL3-MEP-EL-B1-3030 |  | Fire Alarm System Detector Installation | 12d | 2015-05-02 | 2015-05-14 | BL3-MEP-EL-B1-2010, BL3-FN-B1-1070, BL3-MEP-EL-B2-3010 | 130d | 20d | Cash Flow [4034.38 h]; Electrician [192 h]; Excavation [12] | 4,034.38 | MEP | EL | Final F | ff |  |  |
| BL3-MEP-EL-B1-3050 |  | Sockets and Switches Fixing | 8d | 2015-05-02 | 2015-05-10 | BL3-MEP-EL-B1-2030, PROCMEPELE8830, BL3-FN-B1-1070, BL3-MEP-EL-B2-3050 | 182d | 24d | Cash Flow [1166.96 h]; Electrician [128 h]; Excavation [8] | 1,166.96 | MEP | EL | Final F | ff |  |  |
| BL3-MEP-EL-B1-3060 |  | SMDB's , MDB's Termination and Final Connection | 12d | 2015-05-02 | 2015-05-14 | BL3-MEP-EL-B1-2070, BL3-MEP-EL-B1-2030, BL3-MEP-EL-B2-3060, BL3-MEP-EL-B1-3040, BL3-FN-B1-1070 | 201d | 20d | Cash Flow [20725.6 h]; Electrician [384 h]; Excavation [12] | 20,725.64 | MEP | EL | Final F |  |  |  |
| BL3-MEP-EL-B1-3020 |  | CO2 System Installation | 6d | 2015-12-11 | 2015-12-16 | BL3-MEP-EL-B2-3000, BL3-FN-B1-1070, BL3-FN-B1-1020, BL3-FN-B1-1100 | 57d | 51d | Cash Flow [21027.8 h]; Electrician [179.65 h]; Excavation [6] | 21,027.76 | MEP | EL | Final F | ff |  |  |
|  | 3 | **Ground Floor** |  | 2014-09-25 | 2015-12-16 |  |  |  |  |  |  |  |  |  |  |  |
|  | 1 | **Structural** |  | 2014-09-25 | 2014-11-20 |  |  |  |  |  |  |  |  |  |  |  |
| BL3-ST-GF-1000 |  | Reinforcement for Verticals | 12d | 2014-09-25 | 2014-10-13 | BL3-ST-B1-1070 | 0d |  | MNHRS [946.62 h]; Cash Flow [63289.8 h]; Reinforcement [50230]; Excavation [12] | 63,289.8 |  |  |  |  | STR |  |
| BL3-ST-GF-1010 |  | MEP Works in Vertical Element | 5d | 2014-10-04 | 2014-10-13 | ENGMEP8630, BL3-ST-GF-1000 FF | 8d |  | Cash Flow [1798.55 h]; Electrician [160 h]; Excavation [5] | 1,798.55 | MEP | EL | B.W |  |  |  |
| BL3-ST-GF-1020 |  | FW for Verticals | 8d | 2014-10-14 | 2014-10-22 | BL3-ST-GF-1000 | 0d |  | MNHRS [10174.7 h]; Cash Flow [44732.6 h]; Excavation [8] | 44,732.61 |  |  |  |  | STR |  |
| BL3-ST-GF-1030 |  | Concrete Verticals | 1d | 2014-10-23 | 2014-10-23 | BL3-ST-GF-1020, BL3-ST-GF-1010 | 0d |  | MNHRS [1796.62 h]; Cash Flow [30409.4 h]; Concrete [220.3]; Excavation [1] | 30,409.39 |  |  |  |  | STR |  |
| BL3-ST-GF-1040 |  | FW for Slab | 10d | 2014-10-26 | 2014-11-08 | BL3-ST-GF-1030 | 0d |  | MNHRS [10800.9 h]; Cash Flow [47485.4 h]; Excavation [10] | 47,485.39 |  |  |  |  | STR |  |
| BL3-ST-GF-1050 |  | Reinforcement for Slab | 10d | 2014-11-09 | 2014-11-19 | BL3-ST-GF-1040 | 0d |  | MNHRS [949.94 h]; Cash Flow [63511.6 h]; Reinforcement [50406]; Excavation [10] | 63,511.56 |  |  |  |  | STR |  |
| BL3-ST-GF-1060 |  | MEP Works in Slab & Beams | 5d | 2014-11-15 | 2014-11-19 | ENGMEP8630, BL3-ST-GF-1050 FF | 0d |  | Cash Flow [3349.02 h]; Electrician [320 h]; Excavation [5] | 3,349.02 | MEP | EL | B.W |  |  |  |
| BL3-ST-GF-1070 |  | Concrete for Slab | 1d | 2014-11-20 | 2014-11-20 | BL3-ST-GF-1050, BL3-ST-GF-1060 | 0d |  | MNHRS [3323.15 h]; Cash Flow [56247.2 h]; Concrete [408]; Excavation [1] | 56,247.22 |  |  |  |  | STR |  |
|  | 2 | **Fiishing** |  | 2015-02-11 | 2015-12-16 |  |  |  |  |  |  |  |  |  |  |  |
| BL3-FN-GF-1000 |  | Block Works | 24d | 2015-02-11 | 2015-03-10 | ENG-BW-APP-BL31000, ENG-BW-APP-BL31010, ENG-BW-APP-BL31020, ENG-BW-APP-BL31040, ENG-BW-APP-BL31050, ENG-BW-APP-BL31030, ENG-WA-APP-BL31000, ENG-WA-APP-BL31010, ENG-WA-APP-BL31020, ENG-WA-APP-BL31040, ENG-WA-APP-BL31050, ENG-WA-APP-BL31030, BL3-ST-1F-1070 FS+12d, BL3-ST-2F-1070 | 7d | 0d | Cash Flow [26987 h]; MNHRS [2029 h]; BW [530]; Excavation [24] | 26,987.04 |  |  |  |  |  | FIN |
| BL3-FN-GF-1010 |  | Plaster | 21d | 2015-03-11 | 2015-04-04 | BL3-FN-GF-1000, BL3-MEP-PL-GF-1000 FF+3d, BL3-MEP-PL-GF-1010 FF+3d, BL3-MEP-EL-GF-1000 FF+3d, BL3-MEP-EL-GF-1010 FF+3d | 14d | 0d | MNHRS [3285 h]; Cash Flow [38609 h]; Plaster [1095]; Excavation [21] | 38,608.97 |  |  |  |  |  | FIN |
| BL3-FN-GF-1020 |  | Paint 1st Coat | 15d | 2015-04-16 | 2015-05-03 | BL3-FN-GF-1010 FS+10d | 39d | 0d | MNHRS [839 h]; Cash Flow [5066.72 h]; Painting [933]; Excavation [15] | 5,066.72 |  |  |  |  |  | FIN |
| BL3-FN-GF-1030 |  | Ceiling Paint | 10d | 2015-04-28 | 2015-05-09 | BL3-FN-GF-1020 SS+10d | 39d | 0d | MNHRS [38 h]; Cash Flow [228.06 h]; Painting [42]; Excavation [10] | 228.06 |  |  |  |  |  | FIN |
| BL3-FN-GF-1040 |  | Waterproofing | 5d | 2015-05-10 | 2015-05-14 | BL3-FN-GF-1030 | 78d | 0d | MNHRS [6.6 h]; Cash Flow [129.84 h]; Waterproofing [22]; Excavation [5] | 129.84 |  |  |  |  |  | FIN |
| BL3-FN-GF-1050 |  | Wall Tiling | 10d | 2015-05-10 | 2015-05-20 | BL3-FN-GF-1030 | 39d | 0d | MNHRS [1610 h]; Cash Flow [7143.67 h]; Tiling [161]; Excavation [10] | 7,143.67 |  |  |  |  |  | FIN |
| BL3-FN-GF-1060 |  | Flooring Works | 20d | 2015-05-16 | 2015-06-06 | BL3-FN-GF-1040, ENG-FT-APP-BL21030, ENG-FT-APP-BL21040, ENG-FT-APP-BL21050, ENG-FT-APP-BL21060, ENG-FT-APP-BL21070 | 78d | 0d | MNHRS [2431 h]; Cash Flow [56649.5 h]; Tiling [370]; Excavation [20] | 56,649.52 |  |  |  |  |  | FIN |
| BL3-FN-GF-1070 |  | False Ceiling | 15d | 2015-05-21 | 2015-06-06 | BL3-FN-GF-1050, ENG-FC-APP-BL31000, ENG-FC-APP-BL31010, ENG-FC-APP-BL31020, ENG-FC-APP-BL31040, ENG-FC-APP-BL31050, ENG-FC-APP-BL31030, BL3-MEP-AC-GF-2070 FF+6d, BL3-MEP-PL-GF-2020 FF+6d, BL3-MEP-PL-GF-2040 FF+6d, BL3-MEP-AC-GF-2030 FF+6d, BL3-MEP-EL-GF-2030 FF+6d, BL3-MEP-EL-GF-2000 FF+6d, BL3-MEP-EL-GF-2010 FF+6d, BL3-MEP-EL-GF-2020 FF+6d, BL3-MEP-EL-GF-2040 FF+6d, BL3-MEP-EL-GF-2070 FF+6d | 39d | 0d | Cash Flow [50471.2 h]; False Ceiling [1203]; MNHRS [6015 h]; Excavation [15] | 50,471.17 |  |  |  |  |  | FIN |
| BL3-FN-GF-1080 |  | Hand Rails for Stairs | 15d | 2015-06-07 | 2015-06-21 | BL3-FN-GF-1070, ENG-SC-APP-BL31000 | 39d | 0d | Cost [43 h]; Cash Flow [9483.79 h]; Metal Works & Handrail [20]; Excavation [15] | 9,483.79 |  |  |  |  |  | FIN |
| BL3-FN-GF-1090 |  | Doors Installation/ Aluminum Doors | 15d | 2015-06-22 | 2015-07-06 | BL3-FN-GF-1080, ENG-DS-APP-BL31010, ENG-DS-APP-BL31020, ENG-DS-APP-BL31030, ENG-DS-APP-BL31040, ENG-DS-APP-BL31050, ENG-DS-APP-BL31000, BL3-FN-B1-1090 | 39d | 0d | Cash Flow [28215.4 h]; Excavation [15] | 28,215.41 |  |  |  |  |  | FIN |
| BL3-FN-GF-1100 |  | Final Paint | 10d | 2015-12-07 | 2015-12-16 | BL3-FN-GF-1060, BL3-MEP-AC-GF-3000 FF+4d, BL3-MEP-EL-GF-3050 FF+4d, BL3-MEP-EL-GF-3010 FF+4d, BL3-MEP-EL-GF-3020 FF+4d, BL3-MEP-EL-GF-3030 FF+4d, BL3-MEP-EL-GF-3060 FF+4d, BL3-MEP-PL-GF-3000 FF+4d, BL3-MEP-PL-GF-3010 FF+4d, BL3-MEP-FF-GF-3010 FF+4d, BL3-MEP-EL-GF-3070 FF+4d, BL3-MEP-EL-GF-3040 FF+4d | 42d | 0d | Excavation [10] |  |  |  |  |  |  | FIN |

| ID | WBS | Activity | Duration | Start | Finish | Predecessors | Total float | Free float | Resources | Cost | Responsibility | MEP Systems | MEP Steps | Fix |
| --- | --- | --- | --- | --- | --- | --- | --- | --- | --- | --- | --- | --- | --- | --- |
|  | 3 | **MEP Work** |  | 2015-02-17 | 2015-12-12 |  |  |  |  |  |  |  |  |  |
|  | 1 | **Mechanical System** |  | 2015-03-01 | 2015-12-12 |  |  |  |  |  |  |  |  |  |
|  | 2 | **HVAC Works** |  | 2015-03-01 | 2015-06-18 |  |  |  |  |  |  |  |  |  |
|  | 1 | **1st Fix** |  | 2015-03-01 | 2015-03-14 |  |  |  |  |  |  |  |  |  |
| BL3-MEP-AC-GF-1000 |  | Supports and Hungers Fixing | 12d | 2015-03-01 | 2015-03-14 | BL3-MEP-AC-B1-1000, OFF-ENG-MEP-AC1150, BL3-FN-GF-1000 SS+3d, BL3-FN-GF-1000 FF+3d | 16d | 2d | Cash Flow [326.47 h]; Ductman [192 h]; Excavation [12] | 326.47 | MEP | AC | 1st Fix | 1f |
|  | 3 | **2nd Fix** |  | 2015-03-17 | 2015-04-30 |  |  |  |  |  |  |  |  |  |
| BL3-MEP-AC-GF-2000 |  | Fresh Air Duct and Extract Duct Installation and Insulation | 21d | 2015-03-17 | 2015-04-09 | BL3-MEP-AC-GF-1000, OFF-PRO-MEP-AC1020, OFF-PRO-MEP-AC1050, BL3-FN-GF-1010 FF+5d, BL3-MEP-AC-B1-2000 | 15d | 0d | Cash Flow [5549.65 h]; Ductman [1008 h]; Excavation [21] | 5,549.65 | MEP | AC | 2nd Fix | 2f |
| BL3-MEP-AC-GF-2020 |  | Chilled Water Pipes and Fittings Installation | 21d | 2015-03-17 | 2015-04-09 | BL3-MEP-AC-GF-1000, OFF-PRO-MEP-AC1170, BL3-FN-GF-1010 FF+5d | 14d | 0d | Cash Flow [5230.19 h]; Pipe Fitter - CHW [840 h]; Excavation [21] | 5,230.19 | MEP | AC | 2nd Fix | 2f |
| BL3-MEP-AC-GF-2010 |  | FCU's Installation | 8d | 2015-04-01 | 2015-04-09 | BL3-MEP-AC-GF-1000, OFF-PRO-MEP-AC1320, BL3-FN-GF-1010 FF+5d | 74d | 6d | Cash Flow [5992.06 h]; Pipe Fitter - CHW [192 h]; Excavation [8] | 5,992.06 | MEP | AC | 2nd Fix | 2f |
| BL3-MEP-AC-GF-2030 |  | Duct Accessories Installation | 14d | 2015-04-11 | 2015-04-26 | BL3-MEP-AC-GF-2000, OFF-PRO-MEP-AC1080, OFF-PRO-MEP-AC1110, BL3-MEP-AC-B1-2010 | 69d | 8d | Cash Flow [652.97 h]; Pipe Fitter - CHW [448 h]; Excavation [14] | 652.97 | MEP | AC | 2nd Fix | 2f |
| BL3-MEP-AC-GF-2040 |  | Chilled Water Pipes Pressure Test | 6d | 2015-04-11 | 2015-04-16 | BL3-MEP-AC-GF-2020 | 68d | 0d | Cash Flow [581.12 h]; Pipe Fitter - CHW [96 h]; Excavation [6] | 581.12 | MEP | AC | 2nd Fix | 2f |
| BL3-MEP-AC-GF-2050 |  | Chilled Water Pipes Insulation | 12d | 2015-04-18 | 2015-04-30 | BL3-MEP-AC-GF-2040, OFF-PRO-MEP-AC1050 | 163d | 10d | Cash Flow [1658.21 h]; Pipe Fitter - CHW [384 h]; Excavation [12] | 1,658.21 | MEP | AC | 2nd Fix | 2f |
| BL3-MEP-AC-GF-2060 |  | Valve Package Installation | 6d | 2015-04-18 | 2015-04-23 | BL3-MEP-AC-GF-2010, BL3-MEP-AC-GF-2040 | 68d | 0d | Cash Flow [2380.49 h]; Pipe Fitter - CHW [96 h]; Excavation [6] | 2,380.49 | MEP | AC | 2nd Fix | 2f |
| BL3-MEP-AC-GF-2070 |  | FCU's Drain Pipes Installation | 3d | 2015-04-25 | 2015-04-27 | BL3-MEP-AC-GF-2010, BL3-MEP-AC-GF-2060 | 68d | 19d | Cash Flow [516.93 h]; Pipe Fitter - CHW [48 h]; Excavation [3] | 516.93 | MEP | AC | 2nd Fix | 2f |
|  | 4 | **Final Fix** |  | 2015-06-07 | 2015-06-18 |  |  |  |  |  |  |  |  |  |
| BL3-MEP-AC-GF-3000 |  | Grills and Diffusers Fixing | 12d | 2015-06-07 | 2015-06-18 | BL3-MEP-AC-GF-2030, BL3-MEP-AC-B1-3000, OFF-PRO-MEP-AC1140, BL3-FN-GF-1070 | 119d | 5d | Cash Flow [11538.6 h]; Ductman [384 h]; Excavation [12] | 11,538.61 | MEP | AC | Final F | ff |
|  | 1 | **Plumbing and Drainage Works** |  | 2015-03-01 | 2015-07-26 |  |  |  |  |  |  |  |  |  |
|  | 1 | **1st Fix** |  | 2015-03-01 | 2015-03-14 |  |  |  |  |  |  |  |  |  |
| BL3-MEP-PL-GF-1000 |  | Low Level Water Supply Pipes Installation | 12d | 2015-03-01 | 2015-03-14 | BL3-MEP-PL-B1-1000, OFF-ENG-MEP-WS1110, BL3-FN-GF-1000 SS+3d, BL3-FN-GF-1000 FF+3d | 25d | 2d | Cash Flow [713.22 h]; Plumber [42 h]; Excavation [12] | 713.22 | MEP | PL & D | 1st Fix | 1f |
| BL3-MEP-PL-GF-1010 |  | Low Level Drainage Pipes Installation | 12d | 2015-03-01 | 2015-03-14 | BL3-MEP-PL-B1-1010, OFF-ENG-MEP-DR1120, BL3-FN-GF-1000 SS+3d, BL3-FN-GF-1000 FF+3d | 25d | 2d | Cash Flow [82.43 h]; Plumber [12.67 h]; Excavation [12] | 82.43 | MEP | PL & D | 1st Fix | 1f |
| BL3-MEP-PL-GF-1020 |  | Supports installation for High level Pipes | 12d | 2015-03-01 | 2015-03-14 | BL3-MEP-PL-B1-1020, OFF-ENG-MEP-DR1120, OFF-ENG-MEP-WS1110, BL3-FN-GF-1000 SS+3d, BL3-FN-GF-1000 FF+3d | 25d | 2d | Cash Flow [819.68 h]; Plumber [16.35 h]; Excavation [12] | 819.68 | MEP | PL & D | 1st Fix | 1f |
|  | 3 | **2nd Fix** |  | 2015-03-17 | 2015-06-12 |  |  |  |  |  |  |  |  |  |
| BL3-MEP-PL-GF-2000 |  | High Level Water Supply Pipes and Fittings Installation | 21d | 2015-03-17 | 2015-04-09 | BL3-MEP-PL-GF-1020, BL3-MEP-PL-GF-1000, BL3-MEP-PL-B1-2000, BL3-FN-GF-1010 FF+5d | 23d | 0d | Cash Flow [1308.6 h]; Plumber [150.02 h]; Excavation [21] | 1,308.6 | MEP | PL & D | 2nd Fix | 2f |
| BL3-MEP-PL-GF-2010 |  | High Level Drainage Pipes Installation | 21d | 2015-03-17 | 2015-04-09 | BL3-MEP-PL-GF-1020, BL3-MEP-PL-GF-1010, BL3-MEP-PL-B1-2010, BL3-FN-GF-1010 FF+5d | 23d | 0d | Cash Flow [6562.53 h]; Plumber [244.38 h]; Excavation [21] | 6,562.53 | MEP | PL & D | 2nd Fix | 2f |
| BL3-MEP-PL-GF-2020 |  | Water Supply Pipes Pressure Test | 6d | 2015-04-11 | 2015-04-16 | BL3-MEP-PL-GF-2000, BL3-MEP-PL-GF-1000, BL3-MEP-PL-B1-2020 | 77d | 16d | Cash Flow [145.74 h]; Plumber [48 h]; Excavation [6] | 145.74 | MEP | PL & D | 2nd Fix | 2f |
| BL3-MEP-PL-GF-2040 |  | Drainage Pipes Gravity Test | 6d | 2015-04-11 | 2015-04-16 | BL3-MEP-PL-GF-2010, BL3-MEP-PL-GF-1010, BL3-MEP-PL-B1-2040 | 77d | 16d | Cash Flow [820.24 h]; Plumber [48 h]; Excavation [6] | 820.24 | MEP | PL & D | 2nd Fix | 2f |
| BL3-MEP-PL-GF-2030 |  | Floor Drain Installation | 6d | 2015-06-07 | 2015-06-12 | BL3-MEP-PL-B1-2030, OFF-ENG-MEP-DR1120, OFF-PRO-MEP-DR1080, BL3-FN-GF-1060 | 177d | 11d | Cash Flow [548.14 h]; Plumber [6 h]; Excavation [6] | 548.14 | MEP | PL & D | 1st Fix | 2f |

| ID | WBS | Activity | Duration | Start | Finish | Predecessors | Total float | Free float | Resources | Cost | Responsibility | MEP Systems | MEP Steps | Fix |
| --- | --- | --- | --- | --- | --- | --- | --- | --- | --- | --- | --- | --- | --- | --- |
|  | 4 | **Final Fix** |  | 2015-07-07 | 2015-07-26 |  |  |  |  |  |  |  |  |  |
| BL3-MEP-PL-GF-3000 |  | Sanitary Ware Installation Including Connection | 14d | 2015-07-07 | 2015-07-20 | BL3-MEP-PL-GF-2020, BL3-MEP-PL-GF-2040, BL3-MEP-PL-B1-3010, BL3-FN-GF-1060, BL3-FN-GF-1050, BL3-FN-GF-1070, BL3-FN-GF-1090 | 48d | 0d | Cash Flow [4439.52 h]; Plumber [383.86 h]; Excavation [14] | 4,439.52 | MEP | PL & D | Final F | ff |
| BL3-MEP-PL-GF-3010 |  | Sanitary Ware Accessories Installation | 6d | 2015-07-21 | 2015-07-26 | BL3-MEP-PL-GF-3000, BL3-MEP-PL-B1-3020 | 128d | 11d | Cash Flow [160.22 h]; Plumber [36.45 h]; Excavation [6] | 160.22 | MEP | PL & D | Final F | ff |
|  | 3 | **Fire Fighting Works** |  | 2015-12-07 | 2015-12-12 |  |  |  |  |  |  |  |  |  |
|  | 4 | **Final Fix** |  | 2015-12-07 | 2015-12-12 |  |  |  |  |  |  |  |  |  |
| BL3-MEP-FF-GF-3010 |  | Hose reel Cabinet Installation and Connection | 6d | 2015-12-07 | 2015-12-12 | BL3-MEP-FF-B1-3010, OFF-ENG-MEP-FF1110, BL3-FN-GF-1050, BL3-FN-GF-1070 | 6d | 0d | Cash Flow [1330.85 h]; Plumber [192 h]; Excavation [6] | 1,330.85 | MEP | FF | Final F | ff |
| BL3-MEP-FF-GF-3000 |  | Fire Extinguisher Installation | 2d | 2015-12-08 | 2015-12-09 | BL3-MEP-FF-B1-3000, OFF-ENG-MEP-FF1110, BL3-FN-GF-1050, BL3-FN-GF-1100 SS+1d | 42d | 4d | Cash Flow [1074.99 h]; Plumber [8 h]; Excavation [2] | 1,074.99 | MEP | FF | Final F | ff |
|  | 3 | **Electrical System** |  | 2015-02-17 | 2015-06-30 |  |  |  |  |  |  |  |  |  |
|  | 1 | **1st Fix** |  | 2015-02-17 | 2015-03-14 |  |  |  |  |  |  |  |  |  |
| BL3-MEP-EL-GF-1000 |  | PVC Back Boxes and Conduits Fixing in Wall | 22d | 2015-02-17 | 2015-03-14 | ENGMEP9630, ENGMEP9490, ENGMEP9210, ENGMEP9050, ENGMEP8830, ENGMEP8630, PROCMEPELE1990, PROCMEPELE2080, BL3-FN-GF-1000 SS+3d, BL3-FN-GF-1000 FF+3d, BL3-MEP-EL-B1-1000 | 7d | 0d | Cash Flow [3307.67 h]; Electrician [384 h]; Excavation [22] | 3,307.67 | MEP | EL | 1st Fix | 1f |
| BL3-MEP-EL-GF-1010 |  | DB's Inclosure Fixing | 6d | 2015-03-08 | 2015-03-14 | ENGMEP8830, ENGMEP8630, BL3-FN-GF-1000 SS+3d, BL3-MEP-EL-B1-1010, BL3-FN-GF-1000 FF+3d | 29d | 15d | Cash Flow [2130.4 h]; Electrician [96 h]; Excavation [6] | 2,130.4 | MEP | EL | 1st Fix | 1f |
|  | 2 | **2nd Fix** |  | 2015-03-25 | 2015-06-02 |  |  |  |  |  |  |  |  |  |
| BL3-MEP-EL-GF-2020 |  | Cable Tray and Trunking Installation | 14d | 2015-03-25 | 2015-04-09 | PROCMEPELE3340, BL3-FN-GF-1010 FF+5d, BL3-MEP-EL-B1-2000 | 83d | 8d | Cash Flow [9064.45 h]; Electrician [336 h]; Excavation [14] | 9,064.45 | MEP | EL | 2nd Fix | 2f |
| BL3-MEP-EL-GF-2050 |  | Low Current System Wiring | 14d | 2015-03-25 | 2015-04-09 | BL3-MEP-EL-GF-1000, PROCMEPELE7030, PROCMEPELE6400, PROCMEPELE6490, BL3-FN-GF-1010 FF+5d, PROCMEPELE6760 | 257d | 50d | Cash Flow [38217.8 h]; Electrician [244 h]; Excavation [14] | 38,217.78 | MEP | EL |  | 2f |
| BL3-MEP-EL-GF-2000 |  | Lighting Wiring | 12d | 2015-03-28 | 2015-04-09 | BL3-MEP-EL-GF-1000, PROCMEPELE5680, BL3-FN-GF-1010 FF+5d, BL3-MEP-EL-B1-2020 | 83d | 10d | Cash Flow [3566.08 h]; Electrician [241.71 h]; Excavation [12] | 3,566.08 | MEP | EL | 2nd Fix | 2f |
| BL3-MEP-EL-GF-2010 |  | Power Points Wiring | 12d | 2015-03-28 | 2015-04-09 | BL3-MEP-EL-GF-1000, PROCMEPELE5680, BL3-FN-GF-1010 FF+5d, BL3-MEP-EL-B1-2030 | 83d | 10d | Cash Flow [2894.21 h]; Electrician [192 h]; Excavation [12] | 2,894.21 | MEP | EL | 2nd Fix | 2f |
| BL3-MEP-EL-GF-2040 |  | Fire Alarm System Wiring | 12d | 2015-03-28 | 2015-04-09 | BL3-MEP-EL-GF-1000, PROCMEPELE8650, BL3-FN-GF-1010 FF+5d, BL3-MEP-EL-B1-2010 | 83d | 10d | Cash Flow [7111.01 h]; Electrician [192 h]; Excavation [12] | 7,111.01 | MEP | EL | 2nd Fix | 2f |
| BL3-MEP-EL-GF-2030 |  | Emergency Light Wiring | 8d | 2015-04-01 | 2015-04-09 | BL3-MEP-EL-GF-1000, PROCMEPELE9330, BL3-FN-GF-1010 FF+5d, BL3-MEP-EL-B1-2050 | 83d | 14d | Cash Flow [1202.03 h]; Electrician [128 h]; Excavation [8] | 1,202.03 | MEP | EL | 2nd Fix | 2f |
| BL3-MEP-EL-GF-2060 |  | SMDB's Installation | 6d | 2015-05-04 | 2015-05-10 | BL3-MEP-EL-GF-1000, BL3-FN-GF-1020, BL3-MEP-EL-B1-2070 | 205d | 11d | Cash Flow [4196.6 h]; Electrician [45 h]; Excavation [6] | 4,196.6 | MEP | EL | 2nd Fix | 2f |
| BL3-MEP-EL-GF-2070 |  | DB's Installation and Termination | 12d | 2015-05-04 | 2015-05-17 | BL3-MEP-EL-GF-1010, BL3-MEP-EL-B1-2060, BL3-FN-GF-1020 | 51d | 0d | Cash Flow [4970.93 h]; Electrician [288 h]; Excavation [12] | 4,970.93 | MEP | EL | 2nd Fix | 2f |
| BL3-MEP-EL-GF-3000 |  | Power Cable Puling | 14d | 2015-05-18 | 2015-06-02 | BL3-MEP-EL-GF-2020, BL3-MEP-EL-GF-2000, BL3-MEP-EL-GF-2010, BL3-MEP-EL-GF-2070, BL3-MEP-EL-B1-3040 | 98d | 3d | Cash Flow [6361.76 h]; Electrician [168 h]; Excavation [14] | 6,361.76 | MEP | EL | 2nd Fix | 2f |
|  | 3 | **Final Fix** |  | 2015-06-07 | 2015-06-30 |  |  |  |  |  |  |  |  |  |
| BL3-MEP-EL-GF-3010 |  | Lights Fitting Fixing | 14d | 2015-06-07 | 2015-06-20 | BL3-MEP-EL-GF-2000, PROCMEPELE8560, BL3-FN-GF-1070, BL3-MEP-EL-B1-3000 | 86d | 3d | Cash Flow [7322.66 h]; Electrician [244 h]; Excavation [14] | 7,322.66 | MEP | EL | Final F | ff |
| BL3-MEP-EL-GF-3020 |  | Emergency Light Fixing | 8d | 2015-06-07 | 2015-06-14 | BL3-MEP-EL-GF-2030, BL3-FN-GF-1070, BL3-MEP-EL-B1-3010 | 163d | 9d | Cash Flow [5714.02 h]; Electrician [128 h]; Excavation [8] | 5,714.02 | MEP | EL | Final F | ff |
| BL3-MEP-EL-GF-3030 |  | Fire Alarm System Detector Installation | 12d | 2015-06-07 | 2015-06-18 | BL3-MEP-EL-GF-2040, BL3-FN-GF-1070, BL3-MEP-EL-B1-3030 | 110d | 5d | Cash Flow [4034.38 h]; Electrician [192 h]; Excavation [12] | 4,034.38 | MEP | EL | Final F | ff |
| BL3-MEP-EL-GF-3040 |  | Despature for Low Current System Installation | 14d | 2015-06-07 | 2015-06-20 | BL3-MEP-EL-GF-2050, PROCMEPELE7480, BL3-FN-GF-1070, BL3-FN-GF-1020 | 207d | 0d | Cash Flow [72738.2 h]; Electrician [336 h]; Excavation [14] | 72,738.16 | MEP | EL |  | ff |
| BL3-MEP-EL-GF-3060 |  | Sockets and Switches Fixing | 8d | 2015-06-07 | 2015-06-14 | BL3-MEP-EL-GF-2010, PROCMEPELE8830, BL3-FN-GF-1070, BL3-MEP-EL-B1-3050 | 158d | 9d | Cash Flow [1166.96 h]; Electrician [128 h]; Excavation [8] | 1,166.96 | MEP | EL | Final F | ff |
| BL3-MEP-EL-GF-3070 |  | SMDB's Termination and Final Connection | 6d | 2015-06-07 | 2015-06-12 | BL3-MEP-EL-GF-2060, BL3-MEP-EL-B1-3060, BL3-MEP-EL-GF-3000, BL3-FN-GF-1070 | 181d | 11d | Cash Flow [2785.83 h]; Electrician [192 h]; Excavation [6] | 2,785.82 | MEP | EL | Final F | ff |
| BL3-MEP-EL-GF-3050 |  | Low Current System Outlet installation and Connection | 10d | 2015-06-21 | 2015-06-30 | BL3-MEP-EL-GF-2050, BL3-MEP-EL-GF-3040 | 207d | 165d | Cash Flow [3860.79 h]; Electrician [80 h]; Excavation [10] | 3,860.79 | MEP | EL |  | ff |

| ID | WBS | Activity | Duration | Start | Finish | Predecessors | Total float | Free float | Resources | Cost | Structural | Responsibility | MEP Systems | MEP Steps | Finishing | Fix |
| --- | --- | --- | --- | --- | --- | --- | --- | --- | --- | --- | --- | --- | --- | --- | --- | --- |
|  | 4 | **1st Floor** |  | 2014-11-22 | 2015-12-22 |  |  |  |  |  |  |  |  |  |  |  |
|  | 1 | **Structural** |  | 2014-11-22 | 2014-12-30 |  |  |  |  |  |  |  |  |  |  |  |
| BL3-ST-1F-1000 |  | Reinforcement for Verticals | 8d | 2014-11-22 | 2014-11-30 | ENG-STR-BL3-APP130, ENG-STR-BL3-APP140, ENG-STR-BL3-APP150, ENG-STR-BL3-APP160, ENG-STR-BL3-APP170, BL3-ST-GF-1070 | 0d |  | MNHRS [842.2 h]; Cash Flow [56308.2 h]; Reinforcement [44689.1]; Excavation [8] | 56,308.21 | STR |  |  |  |  |  |
| BL3-ST-1F-1010 |  | MEP Works in Vertical Element | 5d | 2014-11-25 | 2014-11-30 | ENGMEP8660, BL3-ST-1F-1000 FF | 8d |  | Cash Flow [1798.55 h]; Electrician [160 h]; Excavation [5] | 1,798.55 |  | MEP | EL | B.W |  |  |
| BL3-ST-1F-1020 |  | FW for Verticals | 8d | 2014-12-01 | 2014-12-09 | BL3-ST-1F-1000 | 0d |  | MNHRS [10174.7 h]; Cash Flow [44732.6 h]; FW [1436.5]; Excavation [8] | 44,732.61 | STR |  |  |  |  |  |
| BL3-ST-1F-1030 |  | Concrete Verticals | 1d | 2014-12-10 | 2014-12-10 | BL3-ST-1F-1020, BL3-ST-1F-1010 | 0d |  | MNHRS [2271.97 h]; Cash Flow [38455.2 h]; Concrete [279]; Excavation [1] | 38,455.16 | STR |  |  |  |  |  |
| BL3-ST-1F-1040 |  | FW for Slab | 8d | 2014-12-11 | 2014-12-20 | BL3-ST-1F-1030 | 0d |  | MNHRS [12784.7 h]; Cash Flow [56207.1 h]; FW [1804.98]; Excavation [8] | 56,207.08 | STR |  |  |  |  |  |
| BL3-ST-1F-1050 |  | Reinforcement for Slab | 8d | 2014-12-21 | 2014-12-29 | BL3-ST-1F-1040 | 0d |  | MNHRS [1629.17 h]; Cash Flow [108924 h]; Reinforcement [86447.4]; Excavation [8] | 108,923.67 | STR |  |  |  |  |  |
| BL3-ST-1F-1060 |  | MEP Works in Slab & Beams | 5d | 2014-12-24 | 2014-12-29 | ENGMEP8660, BL3-ST-1F-1050 FF | 0d |  | Cash Flow [3349.02 h]; Electrician [320 h]; Excavation [5] | 3,349.02 |  | MEP | EL | B.W |  |  |
| BL3-ST-1F-1070 |  | Concrete for Slab | 1d | 2014-12-30 | 2014-12-30 | BL3-ST-1F-1050, BL3-ST-1F-1060 | 0d |  | MNHRS [4220.19 h]; Cash Flow [71430.5 h]; Concrete [517.5]; Excavation [1] | 71,430.52 | STR |  |  |  |  |  |
|  | 2 | **Fiishing** |  | 2015-03-09 | 2015-12-22 |  |  |  |  |  |  |  |  |  |  |  |
| BL3-FN-1F-1000 |  | Block Works | 24d | 2015-03-09 | 2015-04-05 | BL3-ST-2F-1070 FS+12d, BL3-ST-3F-1070 | 7d | 0d | Cash Flow [32282.6 h]; MNHRS [2428.2 h]; BW [634]; Excavation [24] | 32,282.61 |  |  |  |  | FIN |  |
| BL3-FN-1F-1010 |  | Plaster | 21d | 2015-04-06 | 2015-04-29 | BL3-FN-1F-1000, BL3-MEP-EL-1F-1010 FF+3d, BL3-MEP-EL-1F-1000 FF+3d, BL3-MEP-PL-1F-1000 FF+3d, BL3-MEP-PL-1F-1010 FF+3d | 13d | 0d | MNHRS [3417 h]; Cash Flow [40160.4 h]; Plaster [1139]; Excavation [21] | 40,160.36 |  |  |  |  | FIN |  |
| BL3-FN-1F-1020 |  | Paint 1st Coat | 15d | 2015-05-06 | 2015-05-23 | BL3-FN-1F-1010 FS+5d | 37d | 0d | MNHRS [880 h]; Cash Flow [5310.92 h]; Painting [978]; Excavation [15] | 5,310.92 |  |  |  |  | FIN |  |
| BL3-FN-1F-1030 |  | Ceiling Paint | 10d | 2015-05-18 | 2015-05-28 | BL3-FN-1F-1020 SS+10d | 37d | 0d | MNHRS [37.8 h]; Cash Flow [228.06 h]; Painting [42]; Excavation [10] | 228.06 |  |  |  |  | FIN |  |
| BL3-FN-1F-1040 |  | Waterproofing | 5d | 2015-05-30 | 2015-06-03 | BL3-FN-1F-1030 | 75d | 0d | MNHRS [6.6 h]; Cash Flow [129.84 h]; Waterproofing [22]; Excavation [5] | 129.84 |  |  |  |  | FIN |  |
| BL3-FN-1F-1050 |  | Wall Tiling | 10d | 2015-05-30 | 2015-06-08 | BL3-FN-1F-1030 | 37d | 0d | MNHRS [1610 h]; Cash Flow [7143.33 h]; Tiling [161]; Excavation [10] | 7,143.33 |  |  |  |  | FIN |  |
| BL3-FN-1F-1060 |  | Flooring Works | 20d | 2015-06-04 | 2015-06-23 | BL3-FN-1F-1040 | 75d | 0d | MNHRS [2076 h]; Cash Flow [48381.7 h]; Tiling [316]; Excavation [20] | 48,381.68 |  |  |  |  | FIN |  |
| BL3-FN-1F-1070 |  | False Ceiling | 15d | 2015-06-09 | 2015-06-23 | BL3-FN-1F-1050, BL3-MEP-AC-1F-2070 FF+6d, BL3-MEP-PL-1F-2020 FF+6d, BL3-MEP-PL-1F-2040 FF+6d, BL3-MEP-AC-1F-2030 FF+6d, BL3-MEP-EL-1F-2030 FF+6d, BL3-MEP-EL-1F-2000 FF+6d, BL3-MEP-EL-1F-2010 FF+6d, BL3-MEP-EL-1F-2020 FF+6d, BL3-MEP-EL-1F-2040 FF+6d, BL3-MEP-EL-1F-2070 FF+6d | 37d | 0d | Cash Flow [49716.1 h]; False Ceiling [1185]; MNHRS [5925 h]; Excavation [15] | 49,716.07 |  |  |  |  | FIN |  |
| BL3-FN-1F-1080 |  | Hand Rails for Stairs | 15d | 2015-06-24 | 2015-07-08 | BL3-FN-1F-1070 | 37d | 0d | Cash Flow [9483.79 h]; Metal Works & Handrail [20]; MNHRS [43 h]; Excavation [15] | 9,483.79 |  |  |  |  | FIN |  |
| BL3-FN-1F-1090 |  | Doors Installation | 15d | 2015-07-09 | 2015-07-23 | BL3-FN-1F-1080, BL3-FN-GF-1090 | 37d | 0d | Cash Flow [21991.1 h]; Excavation [15] | 21,991.11 |  |  |  |  | FIN |  |
| BL3-FN-1F-1100 |  | Final Paint | 10d | 2015-12-13 | 2015-12-22 | BL3-FN-1F-1060, BL3-MEP-EL-1F-3050 FF+4d, BL3-MEP-EL-1F-3010 FF+4d, BL3-MEP-EL-1F-3020 FF+4d, BL3-MEP-EL-1F-3030 FF+4d, BL3-MEP-EL-1F-3060 FF+4d, BL3-MEP-PL-1F-3000 FF+4d, BL3-MEP-PL-1F-3010 FF+4d, BL3-MEP-FF-1F-3010 FF+4d, BL3-MEP-EL-1F-3070 FF+4d, BL3-MEP-EL-1F-3040 FF+4d | 38d | 0d | Excavation [10] |  |  |  |  |  | FIN |  |
|  | 5 | **MEP Work** |  | 2015-03-15 | 2015-12-18 |  |  |  |  |  |  |  |  |  |  |  |
|  | 1 | **Mechanical System** |  | 2015-03-26 | 2015-12-18 |  |  |  |  |  |  |  |  |  |  |  |
|  | 2 | **HVAC Works** |  | 2015-03-26 | 2015-07-05 |  |  |  |  |  |  |  |  |  |  |  |
|  | 1 | **1st Fix** |  | 2015-03-26 | 2015-04-08 |  |  |  |  |  |  |  |  |  |  |  |
| BL3-MEP-AC-1F-1000 |  | Supports and Hungers Fixing | 12d | 2015-03-26 | 2015-04-08 | BL3-MEP-AC-GF-1000, OFF-ENG-MEP-AC1200, BL3-FN-1F-1000 SS+3d, BL3-FN-1F-1000 FF+3d | 15d | 2d | Cash Flow [326.47 h]; Ductman [192 h]; Excavation [12] | 326.47 |  | MEP | AC | 1st Fix |  | 1f |

| ID | WBS | Activity | Duration | Start | Finish | Predecessors | Total float | Free float | Resources | Cost | Responsibility | MEP Systems | MEP Steps | Fix |
| --- | --- | --- | --- | --- | --- | --- | --- | --- | --- | --- | --- | --- | --- | --- |
|  | 3 | **2nd Fix** |  | 2015-04-12 | 2015-05-26 |  |  |  |  |  |  |  |  |  |
| BL3-MEP-AC-1F-2010 |  | Duct Installation and Insulation | 21d | 2015-04-12 | 2015-05-05 | BL3-MEP-AC-1F-1000, BL3-MEP-AC-GF-2000, BL3-FN-1F-1010 FF+5d | 14d | 0d | Cash Flow [4329.94 h]; Ductman [263 h]; Excavation [21] | 4,329.94 | MEP | AC | 2nd Fix | 2f |
| BL3-MEP-AC-1F-2020 |  | Chilled Water Pipes and Fittings Installation | 21d | 2015-04-12 | 2015-05-05 | BL3-MEP-AC-1F-1000, BL3-MEP-AC-GF-2020, BL3-FN-1F-1010 FF+5d | 13d | 0d | Cash Flow [5230.19 h]; Pipe Fitter - CHW [840 h]; Excavation [21] | 5,230.19 | MEP | AC | 2nd Fix | 2f |
| BL3-MEP-AC-1F-2000 |  | FCU's Installation | 8d | 2015-04-27 | 2015-05-05 | BL3-MEP-AC-1F-1000, BL3-MEP-AC-GF-2010, BL3-FN-1F-1010 FF+5d | 67d | 6d | Cash Flow [5992.06 h]; Pipe Fitter - CHW [192 h]; Excavation [8] | 5,992.06 | MEP | AC | 2nd Fix | 2f |
| BL3-MEP-AC-1F-2030 |  | Duct Accessories Installation | 14d | 2015-05-06 | 2015-05-21 | BL3-MEP-AC-1F-2010, BL3-MEP-AC-GF-2030 | 62d | 7d | Cash Flow [652.97 h]; Pipe Fitter - CHW [448 h]; Excavation [14] | 652.97 | MEP | AC | 2nd Fix | 2f |
| BL3-MEP-AC-1F-2040 |  | Chilled Water Pipes Pressure Test | 6d | 2015-05-06 | 2015-05-12 | BL3-MEP-AC-1F-2020 | 61d | 0d | Cash Flow [581.12 h]; Pipe Fitter - CHW [96 h]; Excavation [6] | 581.12 | MEP | AC | 2nd Fix | 2f |
| BL3-MEP-AC-1F-2050 |  | Chilled Water Pipes Insulation | 12d | 2015-05-13 | 2015-05-26 | BL3-MEP-AC-1F-2040, BL3-MEP-AC-GF-2050 | 153d | 9d | Cash Flow [1658.21 h]; Pipe Fitter - CHW [384 h]; Excavation [12] | 1,658.21 | MEP | AC | 2nd Fix | 2f |
| BL3-MEP-AC-1F-2060 |  | Valve Package Installation | 6d | 2015-05-13 | 2015-05-19 | BL3-MEP-AC-1F-2000, BL3-MEP-AC-1F-2040 | 61d | 0d | Cash Flow [2380.49 h]; Pipe Fitter - CHW [96 h]; Excavation [6] | 2,380.49 | MEP | AC | 2nd Fix | 2f |
| BL3-MEP-AC-1F-2070 |  | FCU's Drain Pipes Installation | 3d | 2015-05-20 | 2015-05-23 | BL3-MEP-AC-1F-2000, BL3-MEP-AC-1F-2060, BL3-MEP-AC-GF-2070 | 61d | 18d | Cash Flow [516.93 h]; Pipe Fitter - CHW [48 h]; Excavation [3] | 516.93 | MEP | AC | 2nd Fix | 2f |
|  | 4 | **Final Fix** |  | 2015-06-24 | 2015-07-05 |  |  |  |  |  |  |  |  |  |
| BL3-MEP-AC-1F-3000 |  | Grills and Diffusers Fixing | 12d | 2015-06-24 | 2015-07-05 | BL3-MEP-AC-1F-2030, BL3-MEP-AC-GF-3000, BL3-FN-1F-1070 | 114d | 1d | Cash Flow [11538.6 h]; Ductman [384 h]; Excavation [12] | 11,538.61 | MEP | AC | Final F | ff |
|  | 1 | **Plumbing and Drainage Works** |  | 2015-03-26 | 2015-08-12 |  |  |  |  |  |  |  |  |  |
|  | 1 | **1st Fix** |  | 2015-03-26 | 2015-04-08 |  |  |  |  |  |  |  |  |  |
| BL3-MEP-PL-1F-1000 |  | Low Level Water Supply Pipes Installation | 12d | 2015-03-26 | 2015-04-08 | BL3-MEP-PL-GF-1000, OFF-ENG-MEP-WS1140, BL3-FN-1F-1000 SS+3d, BL3-FN-1F-1000 FF+3d | 24d | 2d | Cash Flow [713.22 h]; Plumber [42 h]; Excavation [12] | 713.22 | MEP | PL & D | 1st Fix | 1f |
| BL3-MEP-PL-1F-1010 |  | Low Level Drainage Pipes Installation | 12d | 2015-03-26 | 2015-04-08 | BL3-MEP-PL-GF-1010, OFF-ENG-MEP-DR1150, BL3-FN-1F-1000 SS+3d, BL3-FN-1F-1000 FF+3d | 24d | 2d | Cash Flow [2279.46 h]; Plumber [12.67 h]; Excavation [12] | 2,279.46 | MEP | PL & D | 1st Fix | 1f |
| BL3-MEP-PL-1F-1020 |  | Supports installation for High level Pipes | 12d | 2015-03-26 | 2015-04-08 | BL3-MEP-PL-GF-1020, OFF-ENG-MEP-DR1150, OFF-ENG-MEP-WS1140, BL3-FN-1F-1000 SS+3d, BL3-FN-1F-1000 FF+3d | 24d | 2d | Cash Flow [819.68 h]; Plumber [16.35 h]; Excavation [12] | 819.68 | MEP | PL & D | 1st Fix | 1f |
|  | 3 | **2nd Fix** |  | 2015-04-12 | 2015-06-29 |  |  |  |  |  |  |  |  |  |
| BL3-MEP-PL-1F-2000 |  | High Level Water Supply Pipes and Fittings Installation | 21d | 2015-04-12 | 2015-05-05 | BL3-MEP-PL-1F-1020, BL3-MEP-PL-1F-1000, BL3-MEP-PL-GF-2000, BL3-FN-1F-1010 FF+5d | 22d | 0d | Cash Flow [1308.6 h]; Plumber [150.02 h]; Excavation [21] | 1,308.6 | MEP | PL & D | 2nd Fix | 2f |
| BL3-MEP-PL-1F-2010 |  | High Level Drainage Pipes Installation | 21d | 2015-04-12 | 2015-05-05 | BL3-MEP-PL-1F-1020, BL3-MEP-PL-1F-1010, BL3-MEP-PL-GF-2010, BL3-FN-1F-1010 FF+5d | 22d | 0d | Cash Flow [6562.53 h]; Plumber [244.38 h]; Excavation [21] | 6,562.53 | MEP | PL & D | 2nd Fix | 2f |
| BL3-MEP-PL-1F-2020 |  | Water Supply Pipes Pressure Test | 6d | 2015-05-06 | 2015-05-12 | BL3-MEP-PL-1F-2000, BL3-MEP-PL-1F-1000, BL3-MEP-PL-GF-2020 | 70d | 15d | Cash Flow [145.74 h]; Plumber [48 h]; Excavation [6] | 145.74 | MEP | PL & D | 2nd Fix | 2f |
| BL3-MEP-PL-1F-2040 |  | Drainage Pipes Gravity Test | 6d | 2015-05-06 | 2015-05-12 | BL3-MEP-PL-1F-2010, BL3-MEP-PL-1F-1010, BL3-MEP-PL-GF-2040 | 70d | 15d | Cash Flow [820.24 h]; Plumber [48 h]; Excavation [6] | 820.24 | MEP | PL & D | 2nd Fix | 2f |
| BL3-MEP-PL-1F-2030 |  | Floor Drain Installation | 6d | 2015-06-24 | 2015-06-29 | BL3-MEP-PL-GF-2030, OFF-ENG-MEP-DR1150, BL3-FN-1F-1060 | 166d | 7d | Cash Flow [548.14 h]; Plumber [6 h]; Excavation [6] | 548.14 | MEP | PL & D | 1st Fix | 2f |
|  | 4 | **Final Fix** |  | 2015-07-24 | 2015-08-12 |  |  |  |  |  |  |  |  |  |
| BL3-MEP-PL-1F-3000 |  | Sanitary Ware Installation Including Connection | 14d | 2015-07-24 | 2015-08-06 | BL3-MEP-PL-1F-2020, BL3-MEP-PL-1F-2040, BL3-MEP-PL-GF-3000, BL3-FN-1F-1060, BL3-FN-1F-1050, BL3-FN-1F-1070, BL3-FN-1F-1090 | 45d | 0d | Cash Flow [4439.52 h]; Plumber [383.86 h]; Excavation [14] | 4,439.52 | MEP | PL & D | Final F | ff |
| BL3-MEP-PL-1F-3010 |  | Sanitary Ware Accessories Installation | 6d | 2015-08-07 | 2015-08-12 | BL3-MEP-PL-1F-3000, BL3-MEP-PL-GF-3010 | 117d | 9d | Cash Flow [160.22 h]; Plumber [36.45 h]; Excavation [6] | 160.22 | MEP | PL & D | Final F | ff |

| ID | WBS | Activity | Duration | Start | Finish | Predecessors | Total float | Free float | Resources | Cost | Responsibility | MEP Systems | MEP Steps | Fix |
| --- | --- | --- | --- | --- | --- | --- | --- | --- | --- | --- | --- | --- | --- | --- |
|  | 3 | **Fire Fighting Works** |  | 2015-12-13 | 2015-12-18 |  |  |  |  |  |  |  |  |  |
|  | 4 | **Final Fix** |  | 2015-12-13 | 2015-12-18 |  |  |  |  |  |  |  |  |  |
| BL3-MEP-FF-1F-3010 |  | Hose reel Cabinet Installation and Connection | 6d | 2015-12-13 | 2015-12-18 | BL3-MEP-FF-GF-3010, OFF-ENG-MEP-FF1140, BL3-FN-1F-1050, BL3-FN-1F-1070 | 6d | 0d | Cash Flow [1330.85 h]; Plumber [192 h]; Excavation [6] | 1,330.85 | MEP | FF | Final F | ff |
| BL3-MEP-FF-1F-3000 |  | Fire Extinguisher Installation | 2d | 2015-12-14 | 2015-12-15 | BL3-MEP-FF-GF-3000, OFF-ENG-MEP-FF1140, BL3-FN-1F-1050, BL3-FN-1F-1100 SS+1d | 38d | 4d | Cash Flow [1074.99 h]; Plumber [8 h]; Excavation [2] | 1,074.99 | MEP | FF | Final F | ff |
|  | 3 | **Electrical System** |  | 2015-03-15 | 2015-07-17 |  |  |  |  |  |  |  |  |  |
|  | 1 | **1st Fix** |  | 2015-03-15 | 2015-04-08 |  |  |  |  |  |  |  |  |  |
| BL3-MEP-EL-1F-1000 |  | PVC Back Boxes and Conduits Fixing in Wall | 22d | 2015-03-15 | 2015-04-08 | ENGMEP8660, ENGMEP8860, ENGMEP9080, ENGMEP9240, ENGMEP9520, ENGMEP9660, PROCMEPELE1990, PROCMEPELE2080, BL3-FN-1F-1000 SS+3d, BL3-FN-1F-1000 FF+3d, BL3-MEP-EL-GF-1000 | 7d | 0d | Cash Flow [3307.67 h]; Electrician [384 h]; Excavation [22] | 3,307.67 | MEP | EL | 1st Fix | 1f |
| BL3-MEP-EL-1F-1010 |  | DB's Inclosure Fixing | 6d | 2015-04-02 | 2015-04-08 | ENGMEP8660, ENGMEP8860, BL3-FN-1F-1000 SS+3d, BL3-MEP-EL-GF-1010, BL3-FN-1F-1000 FF+3d | 28d | 13d | Cash Flow [2130.4 h]; Electrician [96 h]; Excavation [6] | 2,130.4 | MEP | EL | 1st Fix | 1f |
|  | 2 | **2nd Fix** |  | 2015-04-20 | 2015-06-19 |  |  |  |  |  |  |  |  |  |
| BL3-MEP-EL-1F-2020 |  | Cable Tray and Trunking Installation | 14d | 2015-04-20 | 2015-05-05 | PROCMEPELE3340, BL3-FN-1F-1010 FF+5d, BL3-MEP-EL-GF-2020 | 76d | 4d | Cash Flow [9064.45 h]; Electrician [336 h]; Excavation [14] | 9,064.45 | MEP | EL | 2nd Fix | 2f |
| BL3-MEP-EL-1F-2050 |  | Low Current System Wiring | 14d | 2015-04-20 | 2015-05-05 | BL3-MEP-EL-1F-1000, BL3-FN-1F-1010 FF+5d | 237d | 45d | Cash Flow [38217.8 h]; Electrician [244 h]; Excavation [14] | 38,217.78 | MEP | EL |  | 2f |
| BL3-MEP-EL-1F-2000 |  | Lighting Wiring | 12d | 2015-04-22 | 2015-05-05 | BL3-MEP-EL-1F-1000, PROCMEPELE5680, BL3-FN-1F-1010 FF+5d, BL3-MEP-EL-GF-2000 | 76d | 6d | Cash Flow [3566.08 h]; Electrician [241.71 h]; Excavation [12] | 3,566.08 | MEP | EL | 2nd Fix | 2f |
| BL3-MEP-EL-1F-2010 |  | Power Points Wiring | 12d | 2015-04-22 | 2015-05-05 | BL3-MEP-EL-1F-1000, PROCMEPELE5680, BL3-FN-1F-1010 FF+5d, BL3-MEP-EL-GF-2010 | 76d | 6d | Cash Flow [2894.21 h]; Electrician [192 h]; Excavation [12] | 2,894.21 | MEP | EL | 2nd Fix | 2f |
| BL3-MEP-EL-1F-2040 |  | Fire Alarm System Wiring | 12d | 2015-04-22 | 2015-05-05 | BL3-MEP-EL-1F-1000, PROCMEPELE8650, BL3-FN-1F-1010 FF+5d, BL3-MEP-EL-GF-2040 | 76d | 6d | Cash Flow [7111.01 h]; Electrician [192 h]; Excavation [12] | 7,111.01 | MEP | EL | 2nd Fix | 2f |
| BL3-MEP-EL-1F-2030 |  | Emergency Light Wiring | 8d | 2015-04-27 | 2015-05-05 | BL3-MEP-EL-1F-1000, PROCMEPELE9330, BL3-FN-1F-1010 FF+5d, BL3-MEP-EL-GF-2030 | 76d | 10d | Cash Flow [1202.03 h]; Electrician [128 h]; Excavation [8] | 1,202.03 | MEP | EL | 2nd Fix | 2f |
| BL3-MEP-EL-1F-2060 |  | SMDB's Installation | 6d | 2015-05-24 | 2015-05-30 | BL3-MEP-EL-1F-1000, BL3-FN-1F-1020, BL3-MEP-EL-GF-2060 | 194d | 7d | Cash Flow [4196.6 h]; Electrician [45 h]; Excavation [6] | 4,196.6 | MEP | EL | 2nd Fix | 2f |
| BL3-MEP-EL-1F-2070 |  | DB's Installation and Termination | 12d | 2015-05-24 | 2015-06-05 | BL3-MEP-EL-1F-1010, BL3-MEP-EL-GF-2070, BL3-FN-1F-1020 | 49d | 0d | Cash Flow [4970.93 h]; Electrician [288 h]; Excavation [12] | 4,970.93 | MEP | EL | 2nd Fix | 2f |
| BL3-MEP-EL-1F-3000 |  | Power Cable Puling | 14d | 2015-06-06 | 2015-06-19 | BL3-MEP-EL-1F-2020, BL3-MEP-EL-1F-2000, BL3-MEP-EL-GF-3000, BL3-MEP-EL-1F-2070 | 95d | 0d | Cash Flow [6361.76 h]; Electrician [168 h]; Excavation [14] | 6,361.76 | MEP | EL | 2nd Fix | 2f |
|  | 3 | **Final Fix** |  | 2015-06-24 | 2015-07-17 |  |  |  |  |  |  |  |  |  |
| BL3-MEP-EL-1F-3010 |  | Lights Fitting Fixing | 14d | 2015-06-24 | 2015-07-07 | BL3-MEP-EL-1F-2000, PROCMEPELE8560, BL3-FN-1F-1070, BL3-MEP-EL-GF-3010 | 83d | 0d | Cash Flow [7322.66 h]; Electrician [244 h]; Excavation [14] | 7,322.66 | MEP | EL | Final F | ff |
| BL3-MEP-EL-1F-3020 |  | Emergency Light Fixing | 8d | 2015-06-24 | 2015-07-01 | BL3-MEP-EL-1F-2030, BL3-FN-1F-1070, BL3-MEP-EL-GF-3020 | 154d | 5d | Cash Flow [5714.02 h]; Electrician [128 h]; Excavation [8] | 5,714.02 | MEP | EL | Final F | ff |
| BL3-MEP-EL-1F-3030 |  | Fire Alarm System Detector Installation | 12d | 2015-06-24 | 2015-07-05 | BL3-MEP-EL-1F-2040, BL3-FN-1F-1070, BL3-MEP-EL-GF-3030 | 105d | 1d | Cash Flow [4034.38 h]; Electrician [192 h]; Excavation [12] | 4,034.38 | MEP | EL | Final F | ff |
| BL3-MEP-EL-1F-3040 |  | Despature for Low Current System Installation | 14d | 2015-06-24 | 2015-07-07 | BL3-MEP-EL-1F-2050, BL3-FN-1F-1070, BL3-FN-1F-1020 | 192d | 0d | Cash Flow [72738.2 h]; Electrician [336 h]; Excavation [14] | 72,738.16 | MEP | EL |  | ff |
| BL3-MEP-EL-1F-3060 |  | Sockets and Switches Fixing | 8d | 2015-06-24 | 2015-07-01 | BL3-MEP-EL-1F-2010, PROCMEPELE8830, BL3-FN-1F-1070, BL3-MEP-EL-GF-3060 | 149d | 5d | Cash Flow [1166.96 h]; Electrician [128 h]; Excavation [8] | 1,166.96 | MEP | EL | Final F | ff |
| BL3-MEP-EL-1F-3070 |  | SMDB's Termination and Final Connection | 6d | 2015-06-24 | 2015-06-29 | BL3-MEP-EL-1F-2060, BL3-MEP-EL-1F-2010, BL3-MEP-EL-GF-3070, BL3-MEP-EL-1F-3000, BL3-FN-1F-1070 | 170d | 7d | Cash Flow [2785.83 h]; Electrician [192 h]; Excavation [6] | 2,785.82 | MEP | EL | Final F | ff |
| BL3-MEP-EL-1F-3050 |  | Low Current System Outlet installation and Connection | 10d | 2015-07-08 | 2015-07-17 | BL3-MEP-EL-1F-2050, BL3-MEP-EL-1F-3040 | 192d | 154d | Cash Flow [3860.79 h]; Electrician [80 h]; Excavation [10] | 3,860.79 | MEP | EL |  | ff |

| ID | WBS | Activity | Duration | Start | Finish | Predecessors | Total float | Free float | Resources | Cost | Structural | Responsibility | MEP Systems | MEP Steps | Finishing | Fix |
| --- | --- | --- | --- | --- | --- | --- | --- | --- | --- | --- | --- | --- | --- | --- | --- | --- |
|  | 5 | **2nd Floor** |  | 2014-12-31 | 2015-12-28 |  |  |  |  |  |  |  |  |  |  |  |
|  | 1 | **Structural** |  | 2014-12-31 | 2015-02-10 |  |  |  |  |  |  |  |  |  |  |  |
| BL3-ST-2F-1000 |  | Reinforcement for Verticals | 8d | 2014-12-31 | 2015-01-11 | ENG-STR-BL3-APP180, ENG-STR-BL3-APP190, BL3-ST-1F-1070 | 0d |  | MNHRS [842.2 h]; Cash Flow [56308.2 h]; Reinforcement [44689]; Excavation [8] | 56,308.21 | STR |  |  |  |  |  |
| BL3-ST-2F-1010 |  | MEP Works in Vertical Element | 5d | 2015-01-06 | 2015-01-11 | ENGMEP8660, BL3-ST-2F-1000 FF | 8d |  | Cash Flow [1798.55 h]; Electrician [160 h]; Excavation [5] | 1,798.55 |  | MEP | EL | B.W |  |  |
| BL3-ST-2F-1020 |  | FW for Verticals | 8d | 2015-01-12 | 2015-01-20 | BL3-ST-2F-1000 | 0d |  | MNHRS [9432.02 h]; Cash Flow [41467.3 h]; FW [1331.6]; Excavation [8] | 41,467.27 | STR |  |  |  |  |  |
| BL3-ST-2F-1030 |  | Concrete Verticals | 1d | 2015-01-21 | 2015-01-21 | BL3-ST-2F-1020, BL3-ST-2F-1010 | 0d |  | MNHRS [2105.61 h]; Cash Flow [35639.3 h]; Concrete [258]; Excavation [1] | 35,639.35 | STR |  |  |  |  |  |
| BL3-ST-2F-1040 |  | FW for Slab | 8d | 2015-01-22 | 2015-01-31 | BL3-ST-2F-1030 | 0d |  | MNHRS [13734 h]; Cash Flow [60380.5 h]; FW [1939]; Excavation [8] | 60,380.46 | STR |  |  |  |  |  |
| BL3-ST-2F-1050 |  | Reinforcement for Slab | 8d | 2015-02-01 | 2015-02-09 | BL3-ST-2F-1040 | 0d |  | MNHRS [1629.17 h]; Cash Flow [108924 h]; Reinforcement [86447.4]; Excavation [8] | 108,923.67 | STR |  |  |  |  |  |
| BL3-ST-2F-1060 |  | MEP Works in Slab & Beams | 5d | 2015-02-04 | 2015-02-09 | ENGMEP8660, BL3-ST-2F-1050 FF | 0d |  | Cash Flow [3349.02 h]; Electrician [320 h]; Excavation [5] | 3,349.02 |  | MEP | EL | B.W |  |  |
| BL3-ST-2F-1070 |  | Concrete for Slab | 1d | 2015-02-10 | 2015-02-10 | BL3-ST-2F-1050, BL3-ST-2F-1060 | 0d |  | MNHRS [4026.1 h]; Cash Flow [68145.4 h]; Concrete [493.7]; Excavation [1] | 68,145.41 | STR |  |  |  |  |  |
|  | 2 | **Fiishing** |  | 2015-04-04 | 2015-12-28 |  |  |  |  |  |  |  |  |  |  |  |
| BL3-FN-2F-1000 |  | Block Works | 21d | 2015-04-04 | 2015-04-27 | BL3-ST-3F-1070 FS+12d, BL3-ST-4F-1070 | 9d | 0d | Cash Flow [32282.6 h]; MNHRS [2428.2 h]; BW [634]; Excavation [21] | 32,282.61 |  |  |  |  | FIN |  |
| BL3-FN-2F-1010 |  | Plaster | 20d | 2015-04-28 | 2015-05-20 | BL3-FN-2F-1000, BL3-MEP-EL-2F-1000 FF+3d, BL3-MEP-EL-2F-1010 FF+3d, BL3-MEP-PL-2F-1000 FF+3d, BL3-MEP-PL-2F-1010 FF+3d | 16d | 0d | MNHRS [3417 h]; Cash Flow [40160.4 h]; Plaster [1139]; Excavation [20] | 40,160.36 |  |  |  |  | FIN |  |
| BL3-FN-2F-1020 |  | Paint 1st Coat | 15d | 2015-05-21 | 2015-06-06 | BL3-FN-2F-1010 | 39d | 0d | MNHRS [880 h]; Cash Flow [5310.92 h]; Painting [978]; Excavation [15] | 5,310.92 |  |  |  |  | FIN |  |
| BL3-FN-2F-1030 |  | Ceiling Paint | 10d | 2015-06-02 | 2015-06-11 | BL3-FN-2F-1020 SS+10d | 39d | 0d | MNHRS [37.8 h]; Cash Flow [228.06 h]; Painting [42]; Excavation [10] | 228.06 |  |  |  |  | FIN |  |
| BL3-FN-2F-1040 |  | Waterproofing | 5d | 2015-06-12 | 2015-06-16 | BL3-FN-2F-1030 | 76d | 0d | MNHRS [6.6 h]; Cash Flow [129.84 h]; Waterproofing [22]; Excavation [5] | 129.84 |  |  |  |  | FIN |  |
| BL3-FN-2F-1050 |  | Wall Tiling | 10d | 2015-06-12 | 2015-06-21 | BL3-FN-2F-1030 | 39d | 0d | MNHRS [1610 h]; Cash Flow [7143.33 h]; Tiling [161]; Excavation [10] | 7,143.33 |  |  |  |  | FIN |  |
| BL3-FN-2F-1060 |  | Flooring Works | 20d | 2015-06-17 | 2015-07-06 | BL3-FN-2F-1040 | 76d | 0d | MNHRS [2076 h]; Cash Flow [48381.7 h]; Tiling [316]; Excavation [20] | 48,381.68 |  |  |  |  | FIN |  |
| BL3-FN-2F-1070 |  | False Ceiling | 15d | 2015-06-22 | 2015-07-06 | BL3-FN-2F-1050, BL3-MEP-AC-2F-2070 FF+6d, BL3-MEP-PL-2F-2020 FF+6d, BL3-MEP-PL-2F-2040 FF+6d, BL3-MEP-AC-2F-2030 FF+6d, BL3-MEP-EL-2F-2040 FF+6d, BL3-MEP-EL-2F-2010 FF+6d, BL3-MEP-EL-2F-2020 FF+6d, BL3-MEP-EL-2F-2030 FF+6d, BL3-MEP-EL-2F-2050 FF+6d, BL3-MEP-EL-2F-2070 FF+6d | 39d | 0d | Cash Flow [49716.1 h]; False Ceiling [1185]; MNHRS [5925 h]; Excavation [15] | 49,716.07 |  |  |  |  | FIN |  |
| BL3-FN-2F-1080 |  | Hand Rails for Stairs | 15d | 2015-07-07 | 2015-07-21 | BL3-FN-2F-1070 | 39d | 2d | Cash Flow [9483.79 h]; Metal Works & Handrail [20]; MNHRS [43 h]; Excavation [15] | 9,483.79 |  |  |  |  | FIN |  |
| BL3-FN-2F-1090 |  | Doors Installation | 15d | 2015-07-24 | 2015-08-07 | BL3-FN-2F-1080, BL3-FN-1F-1090 | 37d | 0d | Cash Flow [21991.1 h]; Excavation [15] | 21,991.11 |  |  |  |  | FIN |  |
| BL3-FN-2F-1100 |  | Final Paint | 10d | 2015-12-19 | 2015-12-28 | BL3-FN-2F-1060, BL3-MEP-EL-2F-3040 FF+4d, BL3-MEP-EL-2F-3020 FF+4d, BL3-MEP-EL-2F-3000 FF+4d, BL3-MEP-EL-2F-3010 FF+4d, BL3-MEP-EL-2F-3050 FF+4d, BL3-MEP-PL-2F-3000 FF+4d, BL3-MEP-PL-2F-3010 FF+4d, BL3-MEP-FF-2F-3010 FF+4d, BL3-MEP-EL-2F-3060 FF+4d, BL3-MEP-EL-2F-3030 FF+4d | 34d | 0d | Excavation [10] |  |  |  |  |  | FIN |  |
|  | 15 | **MEP Work** |  | 2015-04-09 | 2015-12-24 |  |  |  |  |  |  |  |  |  |  |  |
|  | 1 | **Mechanical System** |  | 2015-04-18 | 2015-12-24 |  |  |  |  |  |  |  |  |  |  |  |
|  | 2 | **HVAC Works** |  | 2015-04-18 | 2015-07-18 |  |  |  |  |  |  |  |  |  |  |  |
|  | 1 | **1st Fix** |  | 2015-04-18 | 2015-04-30 |  |  |  |  |  |  |  |  |  |  |  |
| BL3-MEP-AC-2F-1000 |  | Supports and Hungers Fixing | 12d | 2015-04-18 | 2015-04-30 | BL3-MEP-AC-1F-1000, BL3-FN-2F-1000 SS+3d, BL3-FN-2F-1000 FF+3d | 17d | 4d | Cash Flow [326.47 h]; Ductman [192 h]; Excavation [12] | 326.47 |  | MEP | AC | 1st Fix |  | 1f |

| ID | WBS | Activity | Duration | Start | Finish | Predecessors | Total float | Free float | Resources | Cost | Responsibility | MEP Systems | MEP Steps | Fix |
| --- | --- | --- | --- | --- | --- | --- | --- | --- | --- | --- | --- | --- | --- | --- |
|  | 3 | **2nd Fix** |  | 2015-05-06 | 2015-06-17 |  |  |  |  |  |  |  |  |  |
| BL3-MEP-AC-2F-2010 |  | Duct Installation and Insulation | 21d | 2015-05-06 | 2015-05-30 | BL3-MEP-AC-2F-1000, BL3-MEP-AC-1F-2010, BL3-FN-2F-1010 FF+5d | 14d | 0d | Cash Flow [4329.94 h]; Ductman [263 h]; Excavation [21] | 4,329.94 | MEP | AC | 2nd Fix | 2f |
| BL3-MEP-AC-2F-2020 |  | Chilled Water Pipes and Fittings Installation | 21d | 2015-05-06 | 2015-05-30 | BL3-MEP-AC-2F-1000, BL3-MEP-AC-1F-2020, BL3-FN-2F-1010 FF+5d | 13d | 0d | Cash Flow [5230.19 h]; Pipe Fitter - CHW [840 h]; Excavation [21] | 5,230.19 | MEP | AC | 2nd Fix | 2f |
| BL3-MEP-AC-2F-2000 |  | FCU's Installation | 8d | 2015-05-18 | 2015-05-26 | BL3-MEP-AC-2F-1000, BL3-MEP-AC-1F-2000, BL3-FN-2F-1010 FF+5d | 64d | 9d | Cash Flow [5992.06 h]; Pipe Fitter - CHW [192 h]; Excavation [8] | 5,992.06 | MEP | AC | 2nd Fix | 2f |
| BL3-MEP-AC-2F-2030 |  | Duct Accessories Installation | 14d | 2015-05-31 | 2015-06-13 | BL3-MEP-AC-2F-2010, BL3-MEP-AC-1F-2030 | 56d | 7d | Cash Flow [652.97 h]; Pipe Fitter - CHW [448 h]; Excavation [14] | 652.97 | MEP | AC | 2nd Fix | 2f |
| BL3-MEP-AC-2F-2040 |  | Chilled Water Pipes Pressure Test | 6d | 2015-05-31 | 2015-06-05 | BL3-MEP-AC-2F-2020 | 55d | 0d | Cash Flow [581.12 h]; Pipe Fitter - CHW [96 h]; Excavation [6] | 581.12 | MEP | AC | 2nd Fix | 2f |
| BL3-MEP-AC-2F-2050 |  | Chilled Water Pipes Insulation | 12d | 2015-06-06 | 2015-06-17 | BL3-MEP-AC-2F-2040, BL3-MEP-AC-1F-2050 | 144d | 9d | Cash Flow [1658.21 h]; Pipe Fitter - CHW [384 h]; Excavation [12] | 1,658.21 | MEP | AC | 2nd Fix | 2f |
| BL3-MEP-AC-2F-2060 |  | Valve Package Installation | 6d | 2015-06-06 | 2015-06-11 | BL3-MEP-AC-2F-2000, BL3-MEP-AC-2F-2040 | 55d | 0d | Cash Flow [2380.49 h]; Pipe Fitter - CHW [96 h]; Excavation [6] | 2,380.49 | MEP | AC | 2nd Fix | 2f |
| BL3-MEP-AC-2F-2070 |  | FCU's Drain Pipes Installation | 3d | 2015-06-12 | 2015-06-14 | BL3-MEP-AC-2F-2000, BL3-MEP-AC-2F-2060, BL3-MEP-AC-1F-2070 | 55d | 16d | Cash Flow [516.93 h]; Pipe Fitter - CHW [48 h]; Excavation [3] | 516.93 | MEP | AC | 2nd Fix | 2f |
|  | 4 | **Final Fix** |  | 2015-07-07 | 2015-07-18 |  |  |  |  |  |  |  |  |  |
| BL3-MEP-AC-2F-3000 |  | Grills and Diffusers Fixing | 12d | 2015-07-07 | 2015-07-18 | BL3-MEP-AC-2F-2030, BL3-MEP-AC-1F-3000, BL3-FN-2F-1070 | 113d | 7d | Cash Flow [11538.6 h]; Ductman [384 h]; Excavation [12] | 11,538.61 | MEP | AC | Final F | ff |
|  | 1 | **Plumbing and Drainage Works** |  | 2015-04-18 | 2015-08-27 |  |  |  |  |  |  |  |  |  |
|  | 1 | **1st Fix** |  | 2015-04-18 | 2015-04-30 |  |  |  |  |  |  |  |  |  |
| BL3-MEP-PL-2F-1000 |  | Low Level Water Supply Pipes Installation | 12d | 2015-04-18 | 2015-04-30 | BL3-MEP-PL-1F-1000, BL3-FN-2F-1000 SS+3d, BL3-FN-2F-1000 FF+3d | 26d | 4d | Cash Flow [713.22 h]; Plumber [42 h]; Excavation [12] | 713.22 | MEP | PL & D | 1st Fix | 1f |
| BL3-MEP-PL-2F-1010 |  | Low Level Drainage Pipes Installation | 12d | 2015-04-18 | 2015-04-30 | BL3-MEP-PL-1F-1010, BL3-FN-2F-1000 SS+3d, BL3-FN-2F-1000 FF+3d | 26d | 4d | Cash Flow [2279.46 h]; Plumber [12.67 h]; Excavation [12] | 2,279.46 | MEP | PL & D | 1st Fix | 1f |
| BL3-MEP-PL-2F-1020 |  | Supports installation for High level Pipes | 12d | 2015-04-18 | 2015-04-30 | BL3-MEP-PL-1F-1020, BL3-FN-2F-1000 SS+3d, BL3-FN-2F-1000 FF+3d | 26d | 4d | Cash Flow [819.68 h]; Plumber [16.35 h]; Excavation [12] | 819.68 | MEP | PL & D | 1st Fix | 1f |
|  | 3 | **2nd Fix** |  | 2015-05-06 | 2015-07-12 |  |  |  |  |  |  |  |  |  |
| BL3-MEP-PL-2F-2000 |  | High Level Water Supply Pipes and Fittings Installation | 21d | 2015-05-06 | 2015-05-30 | BL3-MEP-PL-2F-1020, BL3-MEP-PL-2F-1000, BL3-MEP-PL-1F-2000, BL3-FN-2F-1010 FF+5d | 22d | 0d | Cash Flow [1308.6 h]; Plumber [150.02 h]; Excavation [21] | 1,308.6 | MEP | PL & D | 2nd Fix | 2f |
| BL3-MEP-PL-2F-2010 |  | High Level Drainage Pipes Installation | 21d | 2015-05-06 | 2015-05-30 | BL3-MEP-PL-2F-1020, BL3-MEP-PL-2F-1010, BL3-MEP-PL-1F-2010, BL3-FN-2F-1010 FF+5d | 22d | 0d | Cash Flow [6562.53 h]; Plumber [244.38 h]; Excavation [21] | 6,562.53 | MEP | PL & D | 2nd Fix | 2f |
| BL3-MEP-PL-2F-2020 |  | Water Supply Pipes Pressure Test | 6d | 2015-05-31 | 2015-06-05 | BL3-MEP-PL-2F-2000, BL3-MEP-PL-2F-1000, BL3-MEP-PL-1F-2020 | 64d | 15d | Cash Flow [145.74 h]; Plumber [48 h]; Excavation [6] | 145.74 | MEP | PL & D | 2nd Fix | 2f |
| BL3-MEP-PL-2F-2040 |  | Drainage Pipes Gravity Test | 6d | 2015-05-31 | 2015-06-05 | BL3-MEP-PL-2F-2010, BL3-MEP-PL-2F-1010, BL3-MEP-PL-1F-2040 | 64d | 15d | Cash Flow [820.24 h]; Plumber [48 h]; Excavation [6] | 820.24 | MEP | PL & D | 2nd Fix | 2f |
| BL3-MEP-PL-2F-2030 |  | Floor Drain Installation | 6d | 2015-07-07 | 2015-07-12 | BL3-MEP-PL-1F-2030, BL3-FN-2F-1060 | 159d | 13d | Cash Flow [548.14 h]; Plumber [6 h]; Excavation [6] | 548.14 | MEP | PL & D | 1st Fix | 2f |
|  | 4 | **Final Fix** |  | 2015-08-08 | 2015-08-27 |  |  |  |  |  |  |  |  |  |
| BL3-MEP-PL-2F-3000 |  | Sanitary Ware Installation Including Connection | 14d | 2015-08-08 | 2015-08-21 | BL3-MEP-PL-2F-2020, BL3-MEP-PL-2F-2040, BL3-MEP-PL-1F-3000, BL3-FN-2F-1060, BL3-FN-2F-1050, BL3-FN-2F-1070, BL3-FN-2F-1090 | 44d | 0d | Cash Flow [4439.52 h]; Plumber [383.86 h]; Excavation [14] | 4,439.52 | MEP | PL & D | Final F | ff |
| BL3-MEP-PL-2F-3010 |  | Sanitary Ware Accessories Installation | 6d | 2015-08-22 | 2015-08-27 | BL3-MEP-PL-2F-3000, BL3-MEP-PL-1F-3010 | 108d | 11d | Cash Flow [160.22 h]; Plumber [36.45 h]; Excavation [6] | 160.22 | MEP | PL & D | Final F | ff |

| ID | WBS | Activity | Duration | Start | Finish | Predecessors | Total float | Free float | Resources | Cost | Responsibility | MEP Systems | MEP Steps | Fix |
| --- | --- | --- | --- | --- | --- | --- | --- | --- | --- | --- | --- | --- | --- | --- |
|  | 3 | **Fire Fighting Works** |  | 2015-12-19 | 2015-12-24 |  |  |  |  |  |  |  |  |  |
|  | 4 | **Final Fix** |  | 2015-12-19 | 2015-12-24 |  |  |  |  |  |  |  |  |  |
| BL3-MEP-FF-2F-3010 |  | Hose reel Cabinet Installation and Connection | 6d | 2015-12-19 | 2015-12-24 | BL3-MEP-FF-1F-3010, BL3-FN-2F-1050, BL3-FN-2F-1070 | 6d | 0d | Cash Flow [1330.85 h]; Plumber [192 h]; Excavation [6] | 1,330.85 | MEP | FF | Final F | ff |
| BL3-MEP-FF-2F-3000 |  | Fire Extinguisher Installation | 2d | 2015-12-20 | 2015-12-21 | BL3-MEP-FF-1F-3000, BL3-FN-2F-1050, BL3-FN-2F-1100 SS+1d | 34d | 4d | Cash Flow [1074.99 h]; Plumber [8 h]; Excavation [2] | 1,074.99 | MEP | FF | Final F | ff |
|  | 3 | **Electrical System** |  | 2015-04-09 | 2015-07-30 |  |  |  |  |  |  |  |  |  |
|  | 1 | **1st Fix** |  | 2015-04-09 | 2015-05-04 |  |  |  |  |  |  |  |  |  |
| BL3-MEP-EL-2F-1000 |  | PVC Back Boxes and Conduits Fixing in Wall | 22d | 2015-04-09 | 2015-05-04 | BL3-MEP-EL-1F-1000, BL3-FN-2F-1000 SS+3d, BL3-FN-2F-1000 FF+3d | 7d | 0d | Cash Flow [3307.67 h]; Electrician [384 h]; Excavation [22] | 3,307.67 | MEP | EL | 1st Fix | 1f |
| BL3-MEP-EL-2F-1010 |  | DB's Inclosure Fixing | 6d | 2015-04-25 | 2015-04-30 | BL3-MEP-EL-1F-1010, BL3-FN-2F-1000 SS+3d, BL3-FN-2F-1000 FF+3d | 30d | 14d | Cash Flow [2130.4 h]; Electrician [96 h]; Excavation [6] | 2,130.4 | MEP | EL | 1st Fix | 1f |
|  | 2 | **2nd Fix** |  | 2015-05-11 | 2015-07-03 |  |  |  |  |  |  |  |  |  |
| BL3-MEP-EL-2F-2000 |  | Low Current System Wiring | 14d | 2015-05-11 | 2015-05-26 | BL3-MEP-EL-2F-1000, BL3-FN-2F-1010 FF+5d | 221d | 40d | Cash Flow [38217.8 h]; Electrician [244 h]; Excavation [14] | 38,217.78 | MEP | EL |  | 2f |
| BL3-MEP-EL-2F-2030 |  | Cable Tray and Trunking Installation | 14d | 2015-05-11 | 2015-05-26 | BL3-MEP-EL-1F-2020, BL3-FN-2F-1010 FF+5d | 73d | 5d | Cash Flow [9064.45 h]; Electrician [336 h]; Excavation [14] | 9,064.45 | MEP | EL | 2nd Fix | 2f |
| BL3-MEP-EL-2F-2010 |  | Lighting Wiring | 12d | 2015-05-13 | 2015-05-26 | BL3-MEP-EL-2F-1000, BL3-MEP-EL-1F-2000, BL3-FN-2F-1010 FF+5d | 73d | 7d | Cash Flow [3566.08 h]; Electrician [241.71 h]; Excavation [12] | 3,566.08 | MEP | EL | 2nd Fix | 2f |
| BL3-MEP-EL-2F-2020 |  | Power Points Wiring | 12d | 2015-05-13 | 2015-05-26 | BL3-MEP-EL-2F-1000, BL3-MEP-EL-1F-2010, BL3-FN-2F-1010 FF+5d | 73d | 7d | Cash Flow [2894.21 h]; Electrician [192 h]; Excavation [12] | 2,894.21 | MEP | EL | 2nd Fix | 2f |
| BL3-MEP-EL-2F-2050 |  | Fire Alarm System Wiring | 12d | 2015-05-13 | 2015-05-26 | BL3-MEP-EL-2F-1000, BL3-MEP-EL-1F-2040, BL3-FN-2F-1010 FF+5d | 73d | 7d | Cash Flow [7111.01 h]; Electrician [192 h]; Excavation [12] | 7,111.01 | MEP | EL | 2nd Fix | 2f |
| BL3-MEP-EL-2F-2040 |  | Emergency Light Wiring | 8d | 2015-05-18 | 2015-05-26 | BL3-MEP-EL-2F-1000, BL3-MEP-EL-1F-2030, BL3-FN-2F-1010 FF+5d | 73d | 11d | Cash Flow [1202.03 h]; Electrician [128 h]; Excavation [8] | 1,202.03 | MEP | EL | 2nd Fix | 2f |
| BL3-MEP-EL-2F-2060 |  | SMDB's Installation | 6d | 2015-06-07 | 2015-06-12 | BL3-MEP-EL-2F-1000, BL3-FN-2F-1020, BL3-MEP-EL-1F-2060 | 187d | 13d | Cash Flow [4196.6 h]; Electrician [45 h]; Excavation [6] | 4,196.6 | MEP | EL | 2nd Fix | 2f |
| BL3-MEP-EL-2F-2070 |  | DB's Installation and Termination | 12d | 2015-06-07 | 2015-06-18 | BL3-MEP-EL-2F-1010, BL3-MEP-EL-1F-2070, BL3-FN-2F-1020 | 51d | 1d | Cash Flow [4970.93 h]; Electrician [288 h]; Excavation [12] | 4,970.93 | MEP | EL | 2nd Fix | 2f |
| BL3-MEP-EL-2F-3070 |  | Power Cable Puling | 14d | 2015-06-20 | 2015-07-03 | BL3-MEP-EL-2F-2030, BL3-MEP-EL-2F-2010, BL3-MEP-EL-2F-2020, BL3-MEP-EL-2F-2070, BL3-MEP-EL-1F-3000 | 95d | 3d | Cash Flow [6361.76 h]; Electrician [168 h]; Excavation [14] | 6,361.76 | MEP | EL | 2nd Fix | 2f |
|  | 3 | **Final Fix** |  | 2015-07-07 | 2015-07-30 |  |  |  |  |  |  |  |  |  |
| BL3-MEP-EL-2F-3010 |  | Emergency Light Fixing | 8d | 2015-07-07 | 2015-07-14 | BL3-MEP-EL-2F-2040, BL3-FN-2F-1070, BL3-MEP-EL-1F-3020 | 149d | 11d | Cash Flow [5714.02 h]; Electrician [128 h]; Excavation [8] | 5,714.02 | MEP | EL | Final F | ff |
| BL3-MEP-EL-2F-3020 |  | Fire Alarm System Detector Installation | 12d | 2015-07-07 | 2015-07-18 | BL3-MEP-EL-2F-2050, BL3-FN-2F-1070, BL3-MEP-EL-1F-3030 | 104d | 7d | Cash Flow [4034.38 h]; Electrician [192 h]; Excavation [12] | 4,034.38 | MEP | EL | Final F | ff |
| BL3-MEP-EL-2F-3030 |  | Despature for Low Current System Installation | 14d | 2015-07-07 | 2015-07-20 | BL3-MEP-EL-2F-2000, BL3-FN-2F-1020, BL3-FN-2F-1070 | 181d | 0d | Cash Flow [72738.2 h]; Electrician [336 h]; Excavation [14] | 72,738.16 | MEP | EL |  | ff |
| BL3-MEP-EL-2F-3050 |  | Sockets and Switches Fixing | 8d | 2015-07-07 | 2015-07-14 | BL3-MEP-EL-2F-2020, BL3-FN-2F-1070, BL3-MEP-EL-1F-3060 | 144d | 11d | Cash Flow [1166.96 h]; Electrician [128 h]; Excavation [8] | 1,166.96 | MEP | EL | Final F | ff |
| BL3-MEP-EL-2F-3060 |  | SMDB's Termination and Final Connection | 6d | 2015-07-07 | 2015-07-12 | BL3-MEP-EL-2F-2060, BL3-MEP-EL-1F-3070, BL3-MEP-EL-2F-3070, BL3-FN-2F-1070 | 163d | 13d | Cash Flow [2785.83 h]; Electrician [192 h]; Excavation [6] | 2,785.82 | MEP | EL | Final F | ff |
| BL3-MEP-EL-2F-3000 |  | Lights Fitting Fixing | 14d | 2015-07-08 | 2015-07-21 | BL3-MEP-EL-2F-2010, BL3-FN-2F-1070, BL3-MEP-EL-1F-3010 | 83d | 4d | Cash Flow [7322.66 h]; Electrician [244 h]; Excavation [14] | 7,322.66 | MEP | EL | Final F | ff |
| BL3-MEP-EL-2F-3040 |  | Low Current System Outlet installation and Connection | 10d | 2015-07-21 | 2015-07-30 | BL3-MEP-EL-2F-2000, BL3-MEP-EL-2F-3030 | 181d | 147d | Cash Flow [3860.79 h]; Electrician [80 h]; Excavation [10] | 3,860.79 | MEP | EL |  | ff |

| ID | WBS | Activity | Duration | Start | Finish | Predecessors | Total float | Free float | Resources | Cost | Structural | Responsibility | MEP Systems | MEP Steps | Finishing | Fix |
| --- | --- | --- | --- | --- | --- | --- | --- | --- | --- | --- | --- | --- | --- | --- | --- | --- |
|  | 6 | **3rd Floor** |  | 2015-02-11 | 2016-01-03 |  |  |  |  |  |  |  |  |  |  |  |
|  | 1 | **Structural** |  | 2015-02-11 | 2015-03-08 |  |  |  |  |  |  |  |  |  |  |  |
| BL3-ST-3F-1000 |  | Reinforcement for Verticals | 5d | 2015-02-11 | 2015-02-16 | ENG-STR-BL3-APP200, ENG-STR-BL3-APP210, BL3-ST-2F-1070 | 0d |  | MNHRS [842.2 h]; Cash Flow [56308.2 h]; Reinforcement [44689.1]; Excavation [5] | 56,308.21 | STR |  |  |  |  |  |
| BL3-ST-3F-1010 |  | MEP Works in Vertical Element | 5d | 2015-02-11 | 2015-02-16 | ENGMEP8660, BL3-ST-3F-1000 FF | 5d |  | Cash Flow [1798.55 h]; Electrician [160 h]; Excavation [5] | 1,798.55 |  | MEP | EL | B.W |  |  |
| BL3-ST-3F-1020 |  | FW for Verticals | 5d | 2015-02-17 | 2015-02-22 | BL3-ST-3F-1000 | 0d |  | MNHRS [9250.41 h]; Cash Flow [40668.8 h]; FW [1306]; Excavation [5] | 40,668.84 | STR |  |  |  |  |  |
| BL3-ST-3F-1030 |  | Concrete Verticals | 1d | 2015-02-23 | 2015-02-23 | BL3-ST-3F-1020, BL3-ST-3F-1010 | 0d |  | MNHRS [2003.27 h]; Cash Flow [33907.1 h]; Concrete [246]; Excavation [1] | 33,907.07 | STR |  |  |  |  |  |
| BL3-ST-3F-1040 |  | FW for Slab | 5d | 2015-02-24 | 2015-03-01 | BL3-ST-3F-1030 | 0d |  | MNHRS [16202.4 h]; Cash Flow [71232.8 h]; FW [2287.5]; Excavation [5] | 71,232.75 | STR |  |  |  |  |  |
| BL3-ST-3F-1050 |  | Reinforcement for Slab | 5d | 2015-03-02 | 2015-03-07 | BL3-ST-3F-1040 | 0d |  | MNHRS [1629.17 h]; Cash Flow [108924 h]; Reinforcement [86447.4]; Excavation [5] | 108,923.67 | STR |  |  |  |  |  |
| BL3-ST-3F-1060 |  | MEP Works in Slab & Beams | 5d | 2015-03-02 | 2015-03-07 | ENGMEP8660, BL3-ST-3F-1050 FF | 0d |  | Cash Flow [3349.02 h]; Electrician [320 h]; Excavation [5] | 3,349.02 |  | MEP | EL | B.W |  |  |
| BL3-ST-3F-1070 |  | Concrete for Slab | 1d | 2015-03-08 | 2015-03-08 | BL3-ST-3F-1050, BL3-ST-3F-1060 | 0d |  | MNHRS [4319.68 h]; Cash Flow [73114.5 h]; Concrete [529.7]; Excavation [1] | 73,114.49 | STR |  |  |  |  |  |
|  | 2 | **Fiishing** |  | 2015-04-29 | 2016-01-03 |  |  |  |  |  |  |  |  |  |  |  |
| BL3-FN-3F-1000 |  | Block Works | 20d | 2015-04-29 | 2015-05-21 | BL3-ST-4F-1070 FS+12d, BL3-ST-5F-1070 | 9d | 0d | Cash Flow [26070.3 h]; MNHRS [1961 h]; BW [512]; Excavation [20] | 26,070.27 |  |  |  |  | FIN |  |
| BL3-FN-3F-1010 |  | Plaster | 18d | 2015-05-23 | 2015-06-10 | BL3-FN-3F-1000, BL3-MEP-EL-3F-1000 FF+3d, BL3-MEP-EL-3F-1010 FF+3d, BL3-MEP-PL-3F-1000 FF+3d, BL3-MEP-PL-3F-1010 FF+3d | 18d | 0d | MNHRS [2961 h]; Cash Flow [34801 h]; Plaster [987]; Excavation [18] | 34,801 |  |  |  |  | FIN |  |
| BL3-FN-3F-1020 |  | Paint 1st Coat | 15d | 2015-06-11 | 2015-06-25 | BL3-FN-3F-1010 | 35d | 0d | MNHRS [748 h]; Cash Flow [4512.7 h]; Painting [831]; Excavation [15] | 4,512.7 |  |  |  |  | FIN |  |
| BL3-FN-3F-1030 |  | Ceiling Paint | 10d | 2015-06-21 | 2015-06-30 | BL3-FN-3F-1020 SS+10d | 35d | 0d | MNHRS [39.6 h]; Cash Flow [238.9 h]; Painting [44]; Excavation [10] | 238.9 |  |  |  |  | FIN |  |
| BL3-FN-3F-1040 |  | Waterproofing | 5d | 2015-07-01 | 2015-07-05 | BL3-FN-3F-1030 | 71d | 0d | MNHRS [13 h]; Cash Flow [258.55 h]; Waterproofing [44]; Excavation [5] | 258.55 |  |  |  |  | FIN |  |
| BL3-FN-3F-1050 |  | Wall Tiling | 10d | 2015-07-01 | 2015-07-10 | BL3-FN-3F-1030 | 35d | 0d | MNHRS [1770 h]; Cash Flow [6921.81 h]; Tiling [177]; Excavation [10] | 6,921.81 |  |  |  |  | FIN |  |
| BL3-FN-3F-1060 |  | Flooring Works | 20d | 2015-07-06 | 2015-07-25 | BL3-FN-3F-1040 | 71d | 0d | MNHRS [1708 h]; Cash Flow [39807.8 h]; Tiling [260]; Excavation [20] | 39,807.77 |  |  |  |  | FIN |  |
| BL3-FN-3F-1070 |  | False Ceiling | 15d | 2015-07-11 | 2015-07-25 | BL3-FN-3F-1050, BL3-MEP-AC-3F-2070 FF+6d, BL3-MEP-PL-3F-2020 FF+6d, BL3-MEP-PL-3F-2040 FF+6d, BL3-MEP-AC-3F-2030 FF+6d, BL3-MEP-EL-3F-2030 FF+6d, BL3-MEP-EL-3F-2000 FF+6d, BL3-MEP-EL-3F-2010 FF+6d, BL3-MEP-EL-3F-2020 FF+6d, BL3-MEP-EL-3F-2040 FF+6d, BL3-MEP-EL-3F-2070 FF+6d | 35d | 0d | Cash Flow [46024.1 h]; False Ceiling [1097]; MNHRS [5485 h]; Excavation [15] | 46,024.06 |  |  |  |  | FIN |  |
| BL3-FN-3F-1080 |  | Hand Rails for Stairs | 15d | 2015-07-26 | 2015-08-09 | BL3-FN-3F-1070 | 35d | 0d | Cash Flow [9483.79 h]; Metal Works & Handrail [20]; MNHRS [43 h]; Excavation [15] | 9,483.79 |  |  |  |  | FIN |  |
| BL3-FN-3F-1090 |  | Doors Installation | 15d | 2015-08-10 | 2015-08-24 | BL3-FN-3F-1080, BL3-FN-2F-1090 | 35d | 0d | Cash Flow [21991.1 h]; Excavation [15] | 21,991.11 |  |  |  |  | FIN |  |
| BL3-FN-3F-1100 |  | Final Paint | 10d | 2015-12-25 | 2016-01-03 | BL3-FN-3F-1060, BL3-MEP-AC-3F-3000 FF+4d, BL3-MEP-EL-3F-3050 FF+4d, BL3-MEP-EL-3F-3020 FF+4d, BL3-MEP-EL-3F-3000 FF+4d, BL3-MEP-EL-3F-3010 FF+4d, BL3-MEP-EL-3F-3070 FF+4d, BL3-MEP-PL-3F-3000 FF+4d, BL3-MEP-PL-3F-3010 FF+4d, BL3-MEP-FF-3F-3010 FF+4d, BL3-MEP-EL-3F-3040 FF+4d, BL3-MEP-EL-3F-3030 FF+4d | 30d | 0d | Excavation [10] |  |  |  |  |  | FIN |  |
|  | 7 | **MEP Work** |  | 2015-05-05 | 2015-12-30 |  |  |  |  |  |  |  |  |  |  |  |
|  | 1 | **Mechanical System** |  | 2015-05-12 | 2015-12-30 |  |  |  |  |  |  |  |  |  |  |  |
|  | 2 | **HVAC Works** |  | 2015-05-12 | 2015-08-06 |  |  |  |  |  |  |  |  |  |  |  |
|  | 1 | **1st Fix** |  | 2015-05-12 | 2015-05-25 |  |  |  |  |  |  |  |  |  |  |  |
| BL3-MEP-AC-3F-1000 |  | Supports and Hungers Fixing | 12d | 2015-05-12 | 2015-05-25 | BL3-MEP-AC-2F-1000, BL3-FN-3F-1000 SS+3d, BL3-FN-3F-1000 FF+3d | 17d | 4d | Cash Flow [326.47 h]; Ductman [192 h]; Excavation [12] | 326.47 |  | MEP | AC | 1st Fix |  | 1f |

| ID | WBS | Activity | Duration | Start | Finish | Predecessors | Total float | Free float | Resources | Cost | Responsibility | MEP Systems | MEP Steps | Fix |
| --- | --- | --- | --- | --- | --- | --- | --- | --- | --- | --- | --- | --- | --- | --- |
|  | 3 | **2nd Fix** |  | 2015-05-31 | 2015-07-08 |  |  |  |  |  |  |  |  |  |
| BL3-MEP-AC-3F-2000 |  | Duct Installation and Insulation | 21d | 2015-05-31 | 2015-06-20 | BL3-MEP-AC-3F-1000, BL3-MEP-AC-2F-2010, BL3-FN-3F-1010 FF+5d | 14d | 0d | Cash Flow [4329.94 h]; Ductman [263 h]; Excavation [21] | 4,329.94 | MEP | AC | 2nd Fix | 2f |
| BL3-MEP-AC-3F-2020 |  | Chilled Water Pipes and Fittings Installation | 21d | 2015-05-31 | 2015-06-20 | BL3-MEP-AC-3F-1000, BL3-MEP-AC-2F-2020, BL3-FN-3F-1010 FF+5d | 13d | 0d | Cash Flow [5230.19 h]; Pipe Fitter - CHW [840 h]; Excavation [21] | 5,230.19 | MEP | AC | 2nd Fix | 2f |
| BL3-MEP-AC-3F-2010 |  | FCU's Installation | 8d | 2015-06-08 | 2015-06-15 | BL3-MEP-AC-3F-1000, BL3-MEP-AC-2F-2000, BL3-FN-3F-1010 FF+5d | 60d | 11d | Cash Flow [5992.06 h]; Pipe Fitter - CHW [192 h]; Excavation [8] | 5,992.06 | MEP | AC | 2nd Fix | 2f |
| BL3-MEP-AC-3F-2030 |  | Duct Accessories Installation | 14d | 2015-06-21 | 2015-07-04 | BL3-MEP-AC-3F-2000, BL3-MEP-AC-2F-2030 | 50d | 7d | Cash Flow [652.97 h]; Pipe Fitter - CHW [448 h]; Excavation [14] | 652.97 | MEP | AC | 2nd Fix | 2f |
| BL3-MEP-AC-3F-2040 |  | Chilled Water Pipes Pressure Test | 6d | 2015-06-21 | 2015-06-26 | BL3-MEP-AC-3F-2020 | 49d | 0d | Cash Flow [581.12 h]; Pipe Fitter - CHW [96 h]; Excavation [6] | 581.12 | MEP | AC | 2nd Fix | 2f |
| BL3-MEP-AC-3F-2050 |  | Chilled Water Pipes Insulation | 12d | 2015-06-27 | 2015-07-08 | BL3-MEP-AC-3F-2040, BL3-MEP-AC-2F-2050 | 135d | 9d | Cash Flow [1658.21 h]; Pipe Fitter - CHW [384 h]; Excavation [12] | 1,658.21 | MEP | AC | 2nd Fix | 2f |
| BL3-MEP-AC-3F-2060 |  | Valve Package Installation | 6d | 2015-06-27 | 2015-07-02 | BL3-MEP-AC-3F-2010, BL3-MEP-AC-3F-2040 | 49d | 0d | Cash Flow [2380.49 h]; Pipe Fitter - CHW [96 h]; Excavation [6] | 2,380.49 | MEP | AC | 2nd Fix | 2f |
| BL3-MEP-AC-3F-2070 |  | FCU's Drain Pipes Installation | 3d | 2015-07-03 | 2015-07-05 | BL3-MEP-AC-3F-2010, BL3-MEP-AC-3F-2060, BL3-MEP-AC-2F-2070 | 49d | 14d | Cash Flow [516.93 h]; Pipe Fitter - CHW [48 h]; Excavation [3] | 516.93 | MEP | AC | 2nd Fix | 2f |
|  | 4 | **Final Fix** |  | 2015-07-26 | 2015-08-06 |  |  |  |  |  |  |  |  |  |
| BL3-MEP-AC-3F-3000 |  | Grills and Diffusers Fixing | 12d | 2015-07-26 | 2015-08-06 | BL3-MEP-AC-3F-2030, BL3-MEP-AC-2F-3000, BL3-FN-3F-1070 | 106d | 7d | Cash Flow [11538.6 h]; Ductman [384 h]; Excavation [12] | 11,538.61 | MEP | AC | Final F | ff |
|  | 1 | **Plumbing and Drainage Works** |  | 2015-05-12 | 2015-09-13 |  |  |  |  |  |  |  |  |  |
|  | 1 | **1st Fix** |  | 2015-05-12 | 2015-05-25 |  |  |  |  |  |  |  |  |  |
| BL3-MEP-PL-3F-1000 |  | Low Level Water Supply Pipes Installation | 12d | 2015-05-12 | 2015-05-25 | BL3-MEP-PL-2F-1000, BL3-FN-3F-1000 SS+3d, BL3-FN-3F-1000 FF+3d | 26d | 4d | Cash Flow [713.22 h]; Plumber [42 h]; Excavation [12] | 713.22 | MEP | PL & D | 1st Fix | 1f |
| BL3-MEP-PL-3F-1010 |  | Low Level Drainage Pipes Installation | 12d | 2015-05-12 | 2015-05-25 | BL3-MEP-PL-2F-1010, BL3-FN-3F-1000 SS+3d, BL3-FN-3F-1000 FF+3d | 26d | 4d | Cash Flow [2279.46 h]; Plumber [12.67 h]; Excavation [12] | 2,279.46 | MEP | PL & D | 1st Fix | 1f |
| BL3-MEP-PL-3F-1020 |  | Supports installation for High level Pipes | 12d | 2015-05-12 | 2015-05-25 | BL3-MEP-PL-2F-1020, BL3-FN-3F-1000 SS+3d, BL3-FN-3F-1000 FF+3d | 26d | 4d | Cash Flow [819.68 h]; Plumber [16.35 h]; Excavation [12] | 819.68 | MEP | PL & D | 1st Fix | 1f |
|  | 3 | **2nd Fix** |  | 2015-05-31 | 2015-07-31 |  |  |  |  |  |  |  |  |  |
| BL3-MEP-PL-3F-2000 |  | High Level Water Supply Pipes and Fittings Installation | 21d | 2015-05-31 | 2015-06-20 | BL3-MEP-PL-3F-1020, BL3-MEP-PL-3F-1000, BL3-MEP-PL-2F-2000, BL3-FN-3F-1010 FF+5d | 22d | 0d | Cash Flow [1308.6 h]; Plumber [150.02 h]; Excavation [21] | 1,308.6 | MEP | PL & D | 2nd Fix | 2f |
| BL3-MEP-PL-3F-2010 |  | High Level Drainage Pipes Installation | 21d | 2015-05-31 | 2015-06-20 | BL3-MEP-PL-3F-1020, BL3-MEP-PL-3F-1010, BL3-MEP-PL-2F-2010, BL3-FN-3F-1010 FF+5d | 22d | 0d | Cash Flow [6562.53 h]; Plumber [244.38 h]; Excavation [21] | 6,562.53 | MEP | PL & D | 2nd Fix | 2f |
| BL3-MEP-PL-3F-2020 |  | Water Supply Pipes Pressure Test | 6d | 2015-06-21 | 2015-06-26 | BL3-MEP-PL-3F-2000, BL3-MEP-PL-3F-1000, BL3-MEP-PL-2F-2020 | 58d | 15d | Cash Flow [145.74 h]; Plumber [48 h]; Excavation [6] | 145.74 | MEP | PL & D | 2nd Fix | 2f |
| BL3-MEP-PL-3F-2040 |  | Drainage Pipes Gravity Test | 6d | 2015-06-21 | 2015-06-26 | BL3-MEP-PL-3F-2010, BL3-MEP-PL-3F-1010, BL3-MEP-PL-2F-2040 | 58d | 15d | Cash Flow [820.24 h]; Plumber [48 h]; Excavation [6] | 820.24 | MEP | PL & D | 2nd Fix | 2f |
| BL3-MEP-PL-3F-2030 |  | Floor Drain Installation | 6d | 2015-07-26 | 2015-07-31 | BL3-MEP-PL-2F-2030, BL3-FN-3F-1060 | 146d | 13d | Cash Flow [548.14 h]; Plumber [6 h]; Excavation [6] | 548.14 | MEP | PL & D | 1st Fix | 2f |
|  | 4 | **Final Fix** |  | 2015-08-25 | 2015-09-13 |  |  |  |  |  |  |  |  |  |
| BL3-MEP-PL-3F-3000 |  | Sanitary Ware Installation Including Connection | 14d | 2015-08-25 | 2015-09-07 | BL3-MEP-PL-2F-3000, BL3-MEP-PL-3F-2020, BL3-MEP-PL-3F-2040, BL3-FN-3F-1060, BL3-FN-3F-1050, BL3-FN-3F-1070, BL3-FN-3F-1090 | 41d | 0d | Cash Flow [4439.52 h]; Plumber [383.86 h]; Excavation [14] | 4,439.52 | MEP | PL & D | Final F | ff |
| BL3-MEP-PL-3F-3010 |  | Sanitary Ware Accessories Installation | 6d | 2015-09-08 | 2015-09-13 | BL3-MEP-PL-3F-3000, BL3-MEP-PL-2F-3010 | 97d | 13d | Cash Flow [160.22 h]; Plumber [36.45 h]; Excavation [6] | 160.22 | MEP | PL & D | Final F | ff |

| ID | WBS | Activity | Duration | Start | Finish | Predecessors | Total float | Free float | Resources | Cost | Responsibility | MEP Systems | MEP Steps | Fix |
| --- | --- | --- | --- | --- | --- | --- | --- | --- | --- | --- | --- | --- | --- | --- |
|  | 3 | **Fire Fighting Works** |  | 2015-12-25 | 2015-12-30 |  |  |  |  |  |  |  |  |  |
|  | 4 | **Final Fix** |  | 2015-12-25 | 2015-12-30 |  |  |  |  |  |  |  |  |  |
| BL3-MEP-FF-3F-3010 |  | Hose reel Cabinet Installation and Connection | 6d | 2015-12-25 | 2015-12-30 | BL3-MEP-FF-2F-3010, BL3-FN-3F-1050, BL3-FN-3F-1070 | 6d | 0d | Cash Flow [1330.85 h]; Plumber [192 h]; Excavation [6] | 1,330.85 | MEP | FF | Final F | ff |
| BL3-MEP-FF-3F-3000 |  | Fire Extinguisher Installation | 2d | 2015-12-26 | 2015-12-27 | BL3-MEP-FF-2F-3000, BL3-FN-3F-1050, BL3-FN-3F-1100 SS+1d | 30d | 4d | Cash Flow [1074.99 h]; Plumber [8 h]; Excavation [2] | 1,074.99 | MEP | FF | Final F | ff |
|  | 3 | **Electrical System** |  | 2015-05-05 | 2015-08-18 |  |  |  |  |  |  |  |  |  |
|  | 1 | **1st Fix** |  | 2015-05-05 | 2015-05-30 |  |  |  |  |  |  |  |  |  |
| BL3-MEP-EL-3F-1000 |  | PVC Back Boxes and Conduits Fixing in Wall | 22d | 2015-05-05 | 2015-05-30 | BL3-MEP-EL-2F-1000, BL3-FN-3F-1000 SS+3d, BL3-FN-3F-1000 FF+3d | 7d | 0d | Cash Flow [3307.67 h]; Electrician [384 h]; Excavation [22] | 3,307.67 | MEP | EL | 1st Fix | 1f |
| BL3-MEP-EL-3F-1010 |  | DB's Inclosure Fixing | 6d | 2015-05-19 | 2015-05-25 | BL3-MEP-EL-2F-1010, BL3-FN-3F-1000 SS+3d, BL3-FN-3F-1000 FF+3d | 30d | 12d | Cash Flow [2130.4 h]; Electrician [96 h]; Excavation [6] | 2,130.4 | MEP | EL | 1st Fix | 1f |
|  | 2 | **2nd Fix** |  | 2015-06-02 | 2015-07-21 |  |  |  |  |  |  |  |  |  |
| BL3-MEP-EL-3F-2020 |  | Cable Tray and Trunking Installation | 14d | 2015-06-02 | 2015-06-15 | BL3-MEP-EL-2F-2030, BL3-FN-3F-1010 FF+5d | 69d | 5d | Cash Flow [9064.45 h]; Electrician [336 h]; Excavation [14] | 9,064.45 | MEP | EL | 2nd Fix | 2f |
| BL3-MEP-EL-3F-2050 |  | Low Current System Wiring | 14d | 2015-06-02 | 2015-06-15 | BL3-MEP-EL-3F-1000, BL3-FN-3F-1010 FF+5d | 204d | 40d | Cash Flow [38217.8 h]; Electrician [244 h]; Excavation [14] | 38,217.78 | MEP | EL |  | 2f |
| BL3-MEP-EL-3F-2000 |  | Lighting Wiring | 12d | 2015-06-04 | 2015-06-15 | BL3-MEP-EL-3F-1000, BL3-MEP-EL-2F-2010, BL3-FN-3F-1010 FF+5d | 69d | 14d | Cash Flow [3566.08 h]; Electrician [241.71 h]; Excavation [12] | 3,566.08 | MEP | EL | 2nd Fix | 2f |
| BL3-MEP-EL-3F-2010 |  | Power Points Wiring | 12d | 2015-06-04 | 2015-06-15 | BL3-MEP-EL-3F-1000, BL3-MEP-EL-2F-2020, BL3-FN-3F-1010 FF+5d | 69d | 7d | Cash Flow [2894.21 h]; Electrician [192 h]; Excavation [12] | 2,894.21 | MEP | EL | 2nd Fix | 2f |
| BL3-MEP-EL-3F-2040 |  | Fire Alarm System Wiring | 12d | 2015-06-04 | 2015-06-15 | BL3-MEP-EL-3F-1000, BL3-MEP-EL-2F-2050, BL3-FN-3F-1010 FF+5d | 69d | 7d | Cash Flow [7111.01 h]; Electrician [192 h]; Excavation [12] | 7,111.01 | MEP | EL | 2nd Fix | 2f |
| BL3-MEP-EL-3F-2030 |  | Emergency Light Wiring | 8d | 2015-06-08 | 2015-06-15 | BL3-MEP-EL-3F-1000, BL3-MEP-EL-2F-2040, BL3-FN-3F-1010 FF+5d | 69d | 11d | Cash Flow [1202.03 h]; Electrician [128 h]; Excavation [8] | 1,202.03 | MEP | EL | 2nd Fix | 2f |
| BL3-MEP-EL-3F-2060 |  | SMDB's Installation | 6d | 2015-06-26 | 2015-07-01 | BL3-MEP-EL-3F-1000, BL3-FN-3F-1020, BL3-MEP-EL-2F-2060 | 174d | 13d | Cash Flow [4196.6 h]; Electrician [45 h]; Excavation [6] | 4,196.6 | MEP | EL | 2nd Fix | 2f |
| BL3-MEP-EL-3F-2070 |  | DB's Installation and Termination | 12d | 2015-06-26 | 2015-07-07 | BL3-MEP-EL-3F-1010, BL3-MEP-EL-2F-2070, BL3-FN-3F-1020 | 47d | 0d | Cash Flow [4970.93 h]; Electrician [288 h]; Excavation [12] | 4,970.93 | MEP | EL | 2nd Fix | 2f |
| BL3-MEP-EL-3F-3060 |  | Power Cable Puling | 14d | 2015-07-08 | 2015-07-21 | BL3-MEP-EL-3F-2020, BL3-MEP-EL-3F-2000, BL3-MEP-EL-3F-2010, BL3-MEP-EL-3F-2070, BL3-MEP-EL-2F-3070 | 91d | 4d | Cash Flow [6361.76 h]; Electrician [168 h]; Excavation [14] | 6,361.76 | MEP | EL | 2nd Fix | 2f |
|  | 3 | **Final Fix** |  | 2015-07-26 | 2015-08-18 |  |  |  |  |  |  |  |  |  |
| BL3-MEP-EL-3F-3000 |  | Lights Fitting Fixing | 14d | 2015-07-26 | 2015-08-08 | BL3-MEP-EL-3F-2000, BL3-FN-3F-1070, BL3-MEP-EL-2F-3000 | 79d | 5d | Cash Flow [7322.66 h]; Electrician [244 h]; Excavation [14] | 7,322.66 | MEP | EL | Final F | ff |
| BL3-MEP-EL-3F-3010 |  | Emergency Light Fixing | 8d | 2015-07-26 | 2015-08-02 | BL3-MEP-EL-3F-2030, BL3-FN-3F-1070, BL3-MEP-EL-2F-3010 | 138d | 11d | Cash Flow [5714.02 h]; Electrician [128 h]; Excavation [8] | 5,714.02 | MEP | EL | Final F | ff |
| BL3-MEP-EL-3F-3020 |  | Fire Alarm System Detector Installation | 12d | 2015-07-26 | 2015-08-06 | BL3-MEP-EL-3F-2040, BL3-FN-3F-1070, BL3-MEP-EL-2F-3020 | 97d | 7d | Cash Flow [4034.38 h]; Electrician [192 h]; Excavation [12] | 4,034.38 | MEP | EL | Final F | ff |
| BL3-MEP-EL-3F-3030 |  | Despature for Low Current System Installation | 14d | 2015-07-26 | 2015-08-08 | BL3-MEP-EL-3F-2050, BL3-FN-3F-1070, BL3-FN-3F-1020 | 164d | 0d | Cash Flow [72738.2 h]; Electrician [336 h]; Excavation [14] | 72,738.16 | MEP | EL |  | ff |
| BL3-MEP-EL-3F-3040 |  | SMDB's Termination and Final Connection | 6d | 2015-07-26 | 2015-07-31 | BL3-MEP-EL-2F-3060, BL3-MEP-EL-3F-2060, BL3-MEP-EL-3F-3060, BL3-FN-3F-1070 | 150d | 13d | Cash Flow [2785.83 h]; Electrician [192 h]; Excavation [6] | 2,785.82 | MEP | EL | Final F | ff |
| BL3-MEP-EL-3F-3070 |  | Sockets and Switches Fixing | 8d | 2015-07-26 | 2015-08-02 | BL3-MEP-EL-3F-2010, BL3-FN-3F-1070, BL3-MEP-EL-2F-3050 | 133d | 11d | Cash Flow [1166.96 h]; Electrician [128 h]; Excavation [8] | 1,166.96 | MEP | EL | Final F | ff |
| BL3-MEP-EL-3F-3050 |  | Low Current System Outlet installation and Connection | 10d | 2015-08-09 | 2015-08-18 | BL3-MEP-EL-3F-3030, BL3-MEP-EL-3F-2050 | 164d | 134d | Cash Flow [3860.79 h]; Electrician [80 h]; Excavation [10] | 3,860.79 | MEP | EL |  | ff |

| ID | WBS | Activity | Duration | Start | Finish | Predecessors | Total float | Free float | Resources | Cost | Structural | Responsibility | MEP Systems | MEP Steps | Finishing | Fix |
| --- | --- | --- | --- | --- | --- | --- | --- | --- | --- | --- | --- | --- | --- | --- | --- | --- |
|  | 7 | **4th Floor** |  | 2015-03-09 | 2016-01-09 |  |  |  |  |  |  |  |  |  |  |  |
|  | 1 | **Structural** |  | 2015-03-09 | 2015-04-02 |  |  |  |  |  |  |  |  |  |  |  |
| BL3-ST-4F-1000 |  | Reinforcement for Verticals | 5d | 2015-03-09 | 2015-03-14 | ENG-STR-BL3-APP220, ENG-STR-BL3-APP230, ENG-STR-BL3-APP240, ENG-STR-BL3-APP250, ENG-STR-BL3-APP260, BL3-ST-3F-1070 | 0d |  | MNHRS [842.2 h]; Cash Flow [56308.2 h]; Reinforcement [44689.1]; Excavation [5] | 56,308.21 | STR |  |  |  |  |  |
| BL3-ST-4F-1010 |  | MEP Works in Vertical Element | 5d | 2015-03-09 | 2015-03-14 | ENGMEP8660, BL3-ST-4F-1000 FF | 5d |  | Cash Flow [1798.55 h]; Electrician [160 h]; Excavation [5] | 1,798.55 |  | MEP | EL | B.W |  |  |
| BL3-ST-4F-1020 |  | FW for Verticals | 5d | 2015-03-15 | 2015-03-19 | BL3-ST-4F-1000 | 0d |  | MNHRS [9250.41 h]; Cash Flow [40668.8 h]; FW [1306]; Excavation [5] | 40,668.84 | STR |  |  |  |  |  |
| BL3-ST-4F-1030 |  | Concrete Verticals | 1d | 2015-03-21 | 2015-03-21 | BL3-ST-4F-1020, BL3-ST-4F-1010 | 0d |  | MNHRS [2003.27 h]; Cash Flow [33907.1 h]; Concrete [246]; Excavation [1] | 33,907.07 | STR |  |  |  |  |  |
| BL3-ST-4F-1040 |  | FW for Slab | 5d | 2015-03-22 | 2015-03-26 | BL3-ST-4F-1030 | 0d |  | MNHRS [16202.4 h]; Cash Flow [71232.8 h]; FW [2287.5]; Excavation [5] | 71,232.75 | STR |  |  |  |  |  |
| BL3-ST-4F-1050 |  | Reinforcement for Slab | 5d | 2015-03-28 | 2015-04-01 | BL3-ST-4F-1040 | 0d |  | MNHRS [1629.17 h]; Cash Flow [108924 h]; Reinforcement [86447.4]; Excavation [5] | 108,923.67 | STR |  |  |  |  |  |
| BL3-ST-4F-1060 |  | MEP Works in Slab & Beams | 5d | 2015-03-28 | 2015-04-01 | ENGMEP8660, BL3-ST-4F-1050 FF | 0d |  | Cash Flow [3349.02 h]; Electrician [320 h]; Excavation [5] | 3,349.02 |  | MEP | EL | B.W |  |  |
| BL3-ST-4F-1070 |  | Concrete for Slab | 1d | 2015-04-02 | 2015-04-02 | BL3-ST-4F-1050, BL3-ST-4F-1060 | 0d |  | MNHRS [4319.68 h]; Cash Flow [73114.5 h]; Concrete [529.7]; Excavation [1] | 73,114.49 | STR |  |  |  |  |  |
|  | 2 | **Fiishing** |  | 2015-05-25 | 2016-01-09 |  |  |  |  |  |  |  |  |  |  |  |
| BL3-FN-4F-1000 |  | Block Works | 20d | 2015-05-25 | 2015-06-14 | BL3-ST-5F-1070 FS+12d, BL3-ST-6F-1070 | 9d | 0d | Cash Flow [23219 h]; MNHRS [1746.48 h]; BW [456]; Excavation [20] | 23,219.03 |  |  |  |  | FIN |  |
| BL3-FN-4F-1010 |  | Plaster | 15d | 2015-06-15 | 2015-06-29 | BL3-FN-4F-1000, BL3-MEP-PL-4F-1000 FF+3d, BL3-MEP-PL-4F-1010 FF+3d, BL3-MEP-EL-4F-1010 FF+3d, BL3-MEP-EL-4F-1000 FF+3d | 20d | 0d | MNHRS [2773.5 h]; Cash Flow [32597.3 h]; Plaster [924.5]; Excavation [15] | 32,597.31 |  |  |  |  | FIN |  |
| BL3-FN-4F-1020 |  | Paint 1st Coat | 15d | 2015-06-30 | 2015-07-14 | BL3-FN-4F-1010 | 31d | 0d | MNHRS [832 h]; Cash Flow [5017.38 h]; Painting [924]; Excavation [15] | 5,017.38 |  |  |  |  | FIN |  |
| BL3-FN-4F-1030 |  | Ceiling Paint | 10d | 2015-07-10 | 2015-07-19 | BL3-FN-4F-1020 SS+10d | 31d | 0d | MNHRS [40 h]; Cash Flow [239.35 h]; Painting [44]; Excavation [10] | 239.35 |  |  |  |  | FIN |  |
| BL3-FN-4F-1040 |  | Waterproofing | 5d | 2015-07-20 | 2015-07-24 | BL3-FN-4F-1030 | 66d | 0d | MNHRS [7 h]; Cash Flow [131.28 h]; Waterproofing [22.32]; Excavation [5] | 131.28 |  |  |  |  | FIN |  |
| BL3-FN-4F-1050 |  | Wall Tiling | 10d | 2015-07-20 | 2015-07-29 | BL3-FN-4F-1030 | 31d | 0d | MNHRS [1810 h]; Cash Flow [8288 h]; Tiling [181]; Excavation [10] | 8,288 |  |  |  |  | FIN |  |
| BL3-FN-4F-1060 |  | Flooring Works | 20d | 2015-07-25 | 2015-08-13 | BL3-FN-4F-1040 | 66d | 0d | MNHRS [1379.7 h]; Cash Flow [32152.3 h]; Tiling [210]; Excavation [20] | 32,152.32 |  |  |  |  | FIN |  |
| BL3-FN-4F-1070 |  | False Ceiling | 15d | 2015-07-30 | 2015-08-13 | BL3-FN-4F-1050, BL3-MEP-AC-4F-2070 FF+6d, BL3-MEP-PL-4F-2020 FF+6d, BL3-MEP-PL-4F-2040 FF+6d, BL3-MEP-AC-4F-2030 FF+6d, BL3-MEP-EL-4F-2030 FF+6d, BL3-MEP-EL-4F-2000 FF+6d, BL3-MEP-EL-4F-2010 FF+6d, BL3-MEP-EL-4F-2040 FF+6d, BL3-MEP-EL-4F-2020 FF+6d, BL3-MEP-EL-4F-2070 FF+6d | 31d | 0d | Cash Flow [56060 h]; False Ceiling [1328]; MNHRS [6640 h]; Excavation [15] | 56,060 |  |  |  |  | FIN |  |
| BL3-FN-4F-1080 |  | Hand Rails for Stairs | 15d | 2015-08-14 | 2015-08-28 | BL3-FN-4F-1070 | 31d | 0d | Cash Flow [9483.79 h]; Metal Works & Handrail [20]; MNHRS [43 h]; Excavation [15] | 9,483.79 |  |  |  |  | FIN |  |
| BL3-FN-4F-1090 |  | Doors Installation | 15d | 2015-08-29 | 2015-09-12 | BL3-FN-4F-1080, BL3-FN-3F-1090 | 31d | 0d | Cash Flow [21991.1 h]; Excavation [15] | 21,991.11 |  |  |  |  | FIN |  |
| BL3-FN-4F-1100 |  | Final Paint | 10d | 2015-12-31 | 2016-01-09 | BL3-FN-4F-1060, BL3-MEP-AC-4F-3000 FF+4d, BL3-MEP-EL-4F-3020 FF+4d, BL3-MEP-EL-4F-3050 FF+4d, BL3-MEP-EL-4F-3000 FF+4d, BL3-MEP-EL-4F-3010 FF+4d, BL3-MEP-EL-4F-3060 FF+4d, BL3-MEP-PL-4F-3000 FF+4d, BL3-MEP-PL-4F-3010 FF+4d, BL3-MEP-FF-4F-3010 FF+4d, BL3-MEP-EL-4F-3070 FF+4d, BL3-MEP-EL-4F-3030 FF+4d | 26d | 0d | Excavation [10] |  |  |  |  |  | FIN |  |
|  | 8 | **MEP Work** |  | 2015-05-31 | 2016-01-05 |  |  |  |  |  |  |  |  |  |  |  |
|  | 1 | **Mechanical System** |  | 2015-06-06 | 2016-01-05 |  |  |  |  |  |  |  |  |  |  |  |
|  | 2 | **HVAC Works** |  | 2015-06-06 | 2015-08-25 |  |  |  |  |  |  |  |  |  |  |  |
|  | 1 | **1st Fix** |  | 2015-06-06 | 2015-06-17 |  |  |  |  |  |  |  |  |  |  |  |
| BL3-MEP-AC-4F-1000 |  | Supports and Hungers Fixing | 12d | 2015-06-06 | 2015-06-17 | BL3-MEP-AC-3F-1000, BL3-FN-4F-1000 SS+3d, BL3-FN-4F-1000 FF+3d | 16d | 3d | Cash Flow [326.47 h]; Ductman [192 h]; Excavation [12] | 326.47 |  | MEP | AC | 1st Fix |  | 1f |

| ID | WBS | Activity | Duration | Start | Finish | Predecessors | Total float | Free float | Resources | Cost | Responsibility | MEP Systems | MEP Steps | Fix |
| --- | --- | --- | --- | --- | --- | --- | --- | --- | --- | --- | --- | --- | --- | --- |
|  | 3 | **2nd Fix** |  | 2015-06-21 | 2015-07-29 |  |  |  |  |  |  |  |  |  |
| BL3-MEP-AC-4F-2000 |  | Duct Installation and Insulation | 21d | 2015-06-21 | 2015-07-11 | BL3-MEP-AC-4F-1000, BL3-MEP-AC-3F-2000, BL3-FN-4F-1010 FF+5d | 14d | 0d | Cash Flow [4329.94 h]; Ductman [263 h]; Excavation [21] | 4,329.94 | MEP | AC | 2nd Fix | 2f |
| BL3-MEP-AC-4F-2020 |  | Chilled Water Pipes and Fittings Installation | 21d | 2015-06-21 | 2015-07-11 | BL3-MEP-AC-4F-1000, BL3-MEP-AC-3F-2020, BL3-FN-4F-1010 FF+5d | 13d | 0d | Cash Flow [5230.19 h]; Pipe Fitter - CHW [840 h]; Excavation [21] | 5,230.19 | MEP | AC | 2nd Fix | 2f |
| BL3-MEP-AC-4F-2010 |  | FCU's Installation | 8d | 2015-06-27 | 2015-07-04 | BL3-MEP-AC-4F-1000, BL3-MEP-AC-3F-2010, BL3-FN-4F-1010 FF+5d | 56d | 13d | Cash Flow [5992.06 h]; Pipe Fitter - CHW [192 h]; Excavation [8] | 5,992.06 | MEP | AC | 2nd Fix | 2f |
| BL3-MEP-AC-4F-2030 |  | Duct Accessories Installation | 14d | 2015-07-12 | 2015-07-25 | BL3-MEP-AC-4F-2000, BL3-MEP-AC-3F-2030 | 44d | 7d | Cash Flow [652.97 h]; Pipe Fitter - CHW [448 h]; Excavation [14] | 652.97 | MEP | AC | 2nd Fix | 2f |
| BL3-MEP-AC-4F-2040 |  | Chilled Water Pipes Pressure Test | 6d | 2015-07-12 | 2015-07-17 | BL3-MEP-AC-4F-2020 | 43d | 0d | Cash Flow [581.12 h]; Pipe Fitter - CHW [96 h]; Excavation [6] | 581.12 | MEP | AC | 2nd Fix | 2f |
| BL3-MEP-AC-4F-2050 |  | Chilled Water Pipes Insulation | 12d | 2015-07-18 | 2015-07-29 | BL3-MEP-AC-4F-2040, BL3-MEP-AC-3F-2050 | 126d | 9d | Cash Flow [1658.21 h]; Pipe Fitter - CHW [384 h]; Excavation [12] | 1,658.21 | MEP | AC | 2nd Fix | 2f |
| BL3-MEP-AC-4F-2060 |  | Valve Package Installation | 6d | 2015-07-18 | 2015-07-23 | BL3-MEP-AC-4F-2010, BL3-MEP-AC-4F-2040 | 43d | 0d | Cash Flow [2380.49 h]; Pipe Fitter - CHW [96 h]; Excavation [6] | 2,380.49 | MEP | AC | 2nd Fix | 2f |
| BL3-MEP-AC-4F-2070 |  | FCU's Drain Pipes Installation | 3d | 2015-07-24 | 2015-07-26 | BL3-MEP-AC-4F-2010, BL3-MEP-AC-4F-2060, BL3-MEP-AC-3F-2070 | 43d | 12d | Cash Flow [516.93 h]; Pipe Fitter - CHW [48 h]; Excavation [3] | 516.93 | MEP | AC | 2nd Fix | 2f |
|  | 4 | **Final Fix** |  | 2015-08-14 | 2015-08-25 |  |  |  |  |  |  |  |  |  |
| BL3-MEP-AC-4F-3000 |  | Grills and Diffusers Fixing | 12d | 2015-08-14 | 2015-08-25 | BL3-MEP-AC-3F-3000, BL3-MEP-AC-4F-2030, BL3-FN-4F-1070 | 99d | 13d | Cash Flow [11538.6 h]; Ductman [384 h]; Excavation [12] | 11,538.61 | MEP | AC | Final F | ff |
|  | 1 | **Plumbing and Drainage Works** |  | 2015-06-06 | 2015-10-02 |  |  |  |  |  |  |  |  |  |
|  | 1 | **1st Fix** |  | 2015-06-06 | 2015-06-17 |  |  |  |  |  |  |  |  |  |
| BL3-MEP-PL-4F-1000 |  | Low Level Water Supply Pipes Installation | 12d | 2015-06-06 | 2015-06-17 | BL3-MEP-PL-3F-1000, BL3-FN-4F-1000 SS+3d, BL3-FN-4F-1000 FF+3d | 25d | 3d | Cash Flow [713.22 h]; Plumber [42 h]; Excavation [12] | 713.22 | MEP | PL & D | 1st Fix | 1f |
| BL3-MEP-PL-4F-1010 |  | Low Level Drainage Pipes Installation | 12d | 2015-06-06 | 2015-06-17 | BL3-MEP-PL-3F-1010, BL3-FN-4F-1000 SS+3d, BL3-FN-4F-1000 FF+3d | 25d | 3d | Cash Flow [2279.46 h]; Plumber [12.67 h]; Excavation [12] | 2,279.46 | MEP | PL & D | 1st Fix | 1f |
| BL3-MEP-PL-4F-1020 |  | Supports installation for High level Pipes | 12d | 2015-06-06 | 2015-06-17 | BL3-MEP-PL-3F-1020, BL3-FN-4F-1000 SS+3d, BL3-FN-4F-1000 FF+3d | 25d | 3d | Cash Flow [819.68 h]; Plumber [16.35 h]; Excavation [12] | 819.68 | MEP | PL & D | 1st Fix | 1f |
|  | 3 | **2nd Fix** |  | 2015-06-21 | 2015-08-19 |  |  |  |  |  |  |  |  |  |
| BL3-MEP-PL-4F-2000 |  | High Level Water Supply Pipes and Fittings Installation | 21d | 2015-06-21 | 2015-07-11 | BL3-MEP-PL-4F-1020, BL3-MEP-PL-4F-1000, BL3-MEP-PL-3F-2000, BL3-FN-4F-1010 FF+5d | 22d | 0d | Cash Flow [1308.6 h]; Plumber [150.02 h]; Excavation [21] | 1,308.6 | MEP | PL & D | 2nd Fix | 2f |
| BL3-MEP-PL-4F-2010 |  | High Level Drainage Pipes Installation | 21d | 2015-06-21 | 2015-07-11 | BL3-MEP-PL-4F-1020, BL3-MEP-PL-4F-1010, BL3-MEP-PL-3F-2010, BL3-FN-4F-1010 FF+5d | 22d | 0d | Cash Flow [6562.53 h]; Plumber [244.38 h]; Excavation [21] | 6,562.53 | MEP | PL & D | 2nd Fix | 2f |
| BL3-MEP-PL-4F-2020 |  | Water Supply Pipes Pressure Test | 6d | 2015-07-12 | 2015-07-17 | BL3-MEP-PL-4F-2000, BL3-MEP-PL-4F-1000, BL3-MEP-PL-3F-2020 | 52d | 15d | Cash Flow [145.74 h]; Plumber [48 h]; Excavation [6] | 145.74 | MEP | PL & D | 2nd Fix | 2f |
| BL3-MEP-PL-4F-2040 |  | Drainage Pipes Gravity Test | 6d | 2015-07-12 | 2015-07-17 | BL3-MEP-PL-4F-2010, BL3-MEP-PL-4F-1010, BL3-MEP-PL-3F-2040 | 52d | 15d | Cash Flow [820.24 h]; Plumber [48 h]; Excavation [6] | 820.24 | MEP | PL & D | 2nd Fix | 2f |
| BL3-MEP-PL-4F-2030 |  | Floor Drain Installation | 6d | 2015-08-14 | 2015-08-19 | BL3-MEP-PL-3F-2030, BL3-FN-4F-1060 | 133d | 19d | Cash Flow [548.14 h]; Plumber [6 h]; Excavation [6] | 548.14 | MEP | PL & D | 1st Fix | 2f |
|  | 4 | **Final Fix** |  | 2015-09-13 | 2015-10-02 |  |  |  |  |  |  |  |  |  |
| BL3-MEP-PL-4F-3000 |  | Sanitary Ware Installation Including Connection | 14d | 2015-09-13 | 2015-09-26 | BL3-MEP-PL-3F-3000, BL3-MEP-PL-4F-2020, BL3-MEP-PL-4F-2040, BL3-FN-4F-1060, BL3-FN-4F-1050, BL3-FN-4F-1070, BL3-FN-4F-1090 | 36d | 0d | Cash Flow [4439.52 h]; Plumber [383.86 h]; Excavation [14] | 4,439.52 | MEP | PL & D | Final F | ff |
| BL3-MEP-PL-4F-3010 |  | Sanitary Ware Accessories Installation | 6d | 2015-09-27 | 2015-10-02 | BL3-MEP-PL-4F-3000, BL3-MEP-PL-3F-3010 | 84d | 19d | Cash Flow [160.22 h]; Plumber [36.45 h]; Excavation [6] | 160.22 | MEP | PL & D | Final F | ff |

| ID | WBS | Activity | Duration | Start | Finish | Predecessors | Total float | Free float | Resources | Cost | Responsibility | MEP Systems | MEP Steps | Fix |
| --- | --- | --- | --- | --- | --- | --- | --- | --- | --- | --- | --- | --- | --- | --- |
|  | 3 | **Fire Fighting Works** |  | 2015-12-31 | 2016-01-05 |  |  |  |  |  |  |  |  |  |
|  | 4 | **Final Fix** |  | 2015-12-31 | 2016-01-05 |  |  |  |  |  |  |  |  |  |
| BL3-MEP-FF-4F-3010 |  | Hose reel Cabinet Installation and Connection | 6d | 2015-12-31 | 2016-01-05 | BL3-MEP-FF-3F-3010, BL3-FN-4F-1050, BL3-FN-4F-1070 | 6d | 0d | Cash Flow [1330.85 h]; Plumber [192 h]; Excavation [6] | 1,330.85 | MEP | FF | Final F | ff |
| BL3-MEP-FF-4F-3000 |  | Fire Extinguisher Installation | 2d | 2016-01-01 | 2016-01-02 | BL3-MEP-FF-3F-3000, BL3-FN-4F-1050, BL3-FN-4F-1100 SS+1d | 26d | 4d | Cash Flow [1074.99 h]; Plumber [8 h]; Excavation [2] | 1,074.99 | MEP | FF | Final F | ff |
|  | 3 | **Electrical System** |  | 2015-05-31 | 2015-09-06 |  |  |  |  |  |  |  |  |  |
|  | 1 | **1st Fix** |  | 2015-05-31 | 2015-06-21 |  |  |  |  |  |  |  |  |  |
| BL3-MEP-EL-4F-1000 |  | PVC Back Boxes and Conduits Fixing in Wall | 22d | 2015-05-31 | 2015-06-21 | BL3-MEP-EL-3F-1000, BL3-FN-4F-1000 SS+3d, BL3-FN-4F-1000 FF+3d | 7d | 0d | Cash Flow [3307.67 h]; Electrician [384 h]; Excavation [22] | 3,307.67 | MEP | EL | 1st Fix | 1f |
| BL3-MEP-EL-4F-1010 |  | DB's Inclosure Fixing | 6d | 2015-06-12 | 2015-06-17 | BL3-MEP-EL-3F-1010, BL3-FN-4F-1000 SS+3d, BL3-FN-4F-1000 FF+3d | 29d | 9d | Cash Flow [2130.4 h]; Electrician [96 h]; Excavation [6] | 2,130.4 | MEP | EL | 1st Fix | 1f |
|  | 2 | **2nd Fix** |  | 2015-06-21 | 2015-08-09 |  |  |  |  |  |  |  |  |  |
| BL3-MEP-EL-4F-2020 |  | Cable Tray and Trunking Installation | 14d | 2015-06-21 | 2015-07-04 | BL3-MEP-EL-3F-2020, BL3-FN-4F-1010 FF+5d | 65d | 10d | Cash Flow [9064.45 h]; Electrician [336 h]; Excavation [14] | 9,064.45 | MEP | EL | 2nd Fix | 2f |
| BL3-MEP-EL-4F-2050 |  | Low Current System Wiring | 14d | 2015-06-22 | 2015-07-05 | BL3-MEP-EL-4F-1000, BL3-FN-4F-1010 FF+5d | 186d | 39d | Cash Flow [38217.8 h]; Electrician [244 h]; Excavation [14] | 38,217.78 | MEP | EL |  | 2f |
| BL3-MEP-EL-4F-2010 |  | Power Points Wiring | 12d | 2015-06-23 | 2015-07-04 | BL3-MEP-EL-3F-2010, BL3-MEP-EL-4F-1000, BL3-FN-4F-1010 FF+5d | 65d | 12d | Cash Flow [2894.21 h]; Electrician [192 h]; Excavation [12] | 2,894.21 | MEP | EL | 2nd Fix | 2f |
| BL3-MEP-EL-4F-2040 |  | Fire Alarm System Wiring | 12d | 2015-06-23 | 2015-07-04 | BL3-MEP-EL-3F-2040, BL3-MEP-EL-3F-2040 FF, BL3-MEP-EL-4F-1000, BL3-FN-4F-1010 FF+5d | 65d | 12d | Cash Flow [7111.01 h]; Electrician [192 h]; Excavation [12] | 7,111.01 | MEP | EL | 2nd Fix | 2f |
| BL3-MEP-EL-4F-2030 |  | Emergency Light Wiring | 8d | 2015-06-27 | 2015-07-04 | BL3-MEP-EL-3F-2030, BL3-MEP-EL-4F-1000, BL3-FN-4F-1010 FF+5d | 65d | 16d | Cash Flow [1202.03 h]; Electrician [128 h]; Excavation [8] | 1,202.03 | MEP | EL | 2nd Fix | 2f |
| BL3-MEP-EL-4F-2000 |  | Lighting Wiring | 12d | 2015-06-30 | 2015-07-11 | BL3-MEP-EL-3F-2000, BL3-MEP-EL-4F-1000, BL3-FN-4F-1010, BL3-FN-4F-1010 FF+5d | 58d | 5d | Cash Flow [3566.08 h]; Electrician [241.71 h]; Excavation [12] | 3,566.08 | MEP | EL | 2nd Fix | 2f |
| BL3-MEP-EL-4F-2060 |  | SMDB's Installation | 6d | 2015-07-15 | 2015-07-20 | BL3-MEP-EL-4F-1000, BL3-FN-4F-1020, BL3-MEP-EL-3F-2060 | 161d | 19d | Cash Flow [4196.6 h]; Electrician [45 h]; Excavation [6] | 4,196.6 | MEP | EL | 2nd Fix | 2f |
| BL3-MEP-EL-4F-2070 |  | DB's Installation and Termination | 12d | 2015-07-15 | 2015-07-26 | BL3-MEP-EL-3F-2070, BL3-MEP-EL-4F-1010, BL3-FN-4F-1020 | 43d | 0d | Cash Flow [4970.93 h]; Electrician [288 h]; Excavation [12] | 4,970.93 | MEP | EL | 2nd Fix | 2f |
| BL3-MEP-EL-4F-3040 |  | Power Cable Puling | 14d | 2015-07-27 | 2015-08-09 | BL3-MEP-EL-4F-2020, BL3-MEP-EL-4F-2000, BL3-MEP-EL-4F-2010, BL3-MEP-EL-4F-2070, BL3-MEP-EL-3F-3060 | 86d | 4d | Cash Flow [6361.76 h]; Electrician [168 h]; Excavation [14] | 6,361.76 | MEP | EL | 2nd Fix | 2f |
|  | 3 | **Final Fix** |  | 2015-08-14 | 2015-09-06 |  |  |  |  |  |  |  |  |  |
| BL3-MEP-EL-4F-3000 |  | Lights Fitting Fixing | 14d | 2015-08-14 | 2015-08-27 | BL3-MEP-EL-4F-2000, BL3-FN-4F-1070, BL3-MEP-EL-3F-3000 | 74d | 11d | Cash Flow [7322.66 h]; Electrician [244 h]; Excavation [14] | 7,322.66 | MEP | EL | Final F | ff |
| BL3-MEP-EL-4F-3010 |  | Emergency Light Fixing | 8d | 2015-08-14 | 2015-08-21 | BL3-MEP-EL-4F-2030, BL3-FN-4F-1070, BL3-MEP-EL-3F-3010 | 127d | 17d | Cash Flow [5714.02 h]; Electrician [128 h]; Excavation [8] | 5,714.02 | MEP | EL | Final F | ff |
| BL3-MEP-EL-4F-3020 |  | Fire Alarm System Detector Installation | 12d | 2015-08-14 | 2015-08-25 | BL3-MEP-EL-4F-2040, BL3-FN-4F-1070, BL3-MEP-EL-3F-3020 | 90d | 13d | Cash Flow [4034.38 h]; Electrician [192 h]; Excavation [12] | 4,034.38 | MEP | EL | Final F | ff |
| BL3-MEP-EL-4F-3030 |  | Despature for Low Current System Installation | 14d | 2015-08-14 | 2015-08-27 | BL3-MEP-EL-4F-2050, BL3-FN-4F-1070, BL3-FN-4F-1020 | 147d | 0d | Cash Flow [72738.2 h]; Electrician [336 h]; Excavation [14] | 72,738.16 | MEP | EL |  | ff |
| BL3-MEP-EL-4F-3060 |  | Sockets and Switches Fixing | 8d | 2015-08-14 | 2015-08-21 | BL3-MEP-EL-4F-2010, BL3-FN-4F-1070, BL3-MEP-EL-3F-3070 | 122d | 17d | Cash Flow [1166.96 h]; Electrician [128 h]; Excavation [8] | 1,166.96 | MEP | EL | Final F | ff |
| BL3-MEP-EL-4F-3070 |  | SMDB's Termination and Final Connection | 6d | 2015-08-14 | 2015-08-19 | BL3-MEP-EL-4F-3040, BL3-MEP-EL-3F-3040, BL3-MEP-EL-4F-2060, BL3-MEP-EL-4F-2010, BL3-FN-4F-1070 | 137d | 19d | Cash Flow [2785.83 h]; Electrician [192 h]; Excavation [6] | 2,785.82 | MEP | EL | Final F | ff |
| BL3-MEP-EL-4F-3050 |  | Low Current System Outlet installation and Connection | 10d | 2015-08-28 | 2015-09-06 | BL3-MEP-EL-4F-3030, BL3-MEP-EL-4F-2050 | 147d | 121d | Cash Flow [3860.79 h]; Electrician [80 h]; Excavation [10] | 3,860.79 | MEP | EL |  | ff |

| ID | WBS | Activity | Duration | Start | Finish | Predecessors | Total float | Free float | Resources | Cost | Structural | Responsibility | MEP Systems | MEP Steps | Finishing | Fix |
| --- | --- | --- | --- | --- | --- | --- | --- | --- | --- | --- | --- | --- | --- | --- | --- | --- |
|  | 8 | **5th Floor** |  | 2015-04-04 | 2016-01-15 |  |  |  |  |  |  |  |  |  |  |  |
|  | 1 | **Structural** |  | 2015-04-04 | 2015-04-28 |  |  |  |  |  |  |  |  |  |  |  |
| BL3-ST-5F-1000 |  | Reinforcement for Verticals | 5d | 2015-04-04 | 2015-04-08 | ENG-STR-BL3-APP270, ENG-STR-BL3-APP280, BL3-ST-4F-1070 | 0d |  | MNHRS [842.2 h]; Cash Flow [56308.2 h]; Reinforcement [44689.1]; Excavation [5] | 56,308.21 | STR |  |  |  |  |  |
| BL3-ST-5F-1010 |  | MEP Works in Vertical Element | 5d | 2015-04-04 | 2015-04-08 | ENGMEP8660, BL3-ST-5F-1000 FF | 5d |  | Cash Flow [1798.55 h]; Electrician [160 h]; Excavation [5] | 1,798.55 |  | MEP | EL | B.W |  |  |
| BL3-ST-5F-1020 |  | FW for Verticals | 5d | 2015-04-09 | 2015-04-14 | BL3-ST-5F-1000 | 0d |  | MNHRS [9250.41 h]; Cash Flow [40668.8 h]; FW [1306]; Excavation [5] | 40,668.84 | STR |  |  |  |  |  |
| BL3-ST-5F-1030 |  | Concrete Verticals | 1d | 2015-04-15 | 2015-04-15 | BL3-ST-5F-1020, BL3-ST-5F-1010 | 0d |  | MNHRS [2003.27 h]; Cash Flow [33907.1 h]; Concrete [246]; Excavation [1] | 33,907.07 | STR |  |  |  |  |  |
| BL3-ST-5F-1040 |  | FW for Slab | 5d | 2015-04-16 | 2015-04-21 | BL3-ST-5F-1030 | 0d |  | MNHRS [16202.4 h]; Cash Flow [71232.8 h]; FW [2287.5]; Excavation [5] | 71,232.75 | STR |  |  |  |  |  |
| BL3-ST-5F-1050 |  | Reinforcement for Slab | 5d | 2015-04-22 | 2015-04-27 | BL3-ST-5F-1040 | 0d |  | MNHRS [1629.17 h]; Cash Flow [108924 h]; Reinforcement [86447.4]; Excavation [5] | 108,923.67 | STR |  |  |  |  |  |
| BL3-ST-5F-1060 |  | MEP Works in Slab & Beams | 5d | 2015-04-22 | 2015-04-27 | ENGMEP8660, BL3-ST-5F-1050 FF | 0d |  | Cash Flow [3349.02 h]; Electrician [320 h]; Excavation [5] | 3,349.02 |  | MEP | EL | B.W |  |  |
| BL3-ST-5F-1070 |  | Concrete for Slab | 1d | 2015-04-28 | 2015-04-28 | BL3-ST-5F-1050, BL3-ST-5F-1060 | 0d |  | MNHRS [4319.68 h]; Cash Flow [73114.5 h]; Concrete [529.7]; Excavation [1] | 73,114.49 | STR |  |  |  |  |  |
|  | 2 | **Fiishing** |  | 2015-06-17 | 2016-01-15 |  |  |  |  |  |  |  |  |  |  |  |
| BL3-FN-5F-1000 |  | Block Works | 20d | 2015-06-17 | 2015-07-06 | BL3-ST-6F-1070 FS+12d, BL3-ST-7F-1070 | 9d | 0d | Cash Flow [23219 h]; MNHRS [1746.48 h]; BW [456]; Excavation [20] | 23,219.03 |  |  |  |  | FIN |  |
| BL3-FN-5F-1010 |  | Plaster | 18d | 2015-07-07 | 2015-07-24 | BL3-FN-5F-1000, BL3-MEP-EL-5F-1010 FF+3d, BL3-MEP-EL-5F-1000 FF+3d, BL3-MEP-PL-5F-1000 FF+3d, BL3-MEP-PL-5F-1010 FF+3d | 17d | 0d | MNHRS [2773.5 h]; Cash Flow [32597.3 h]; Plaster [924.5]; Excavation [18] | 32,597.31 |  |  |  |  | FIN |  |
| BL3-FN-5F-1020 |  | Paint 1st Coat | 15d | 2015-07-25 | 2015-08-08 | BL3-FN-5F-1010 | 21d | 0d | MNHRS [832 h]; Cash Flow [5017.38 h]; Painting [924]; Excavation [15] | 5,017.38 |  |  |  |  | FIN |  |
| BL3-FN-5F-1030 |  | Ceiling Paint | 10d | 2015-08-04 | 2015-08-13 | BL3-FN-5F-1020 SS+10d | 21d | 0d | MNHRS [40 h]; Cash Flow [239.35 h]; Painting [44]; Excavation [10] | 239.35 |  |  |  |  | FIN |  |
| BL3-FN-5F-1040 |  | Waterproofing | 5d | 2015-08-14 | 2015-08-18 | BL3-FN-5F-1030 | 55d | 0d | MNHRS [7 h]; Cash Flow [131.28 h]; Waterproofing [22.32]; Excavation [5] | 131.28 |  |  |  |  | FIN |  |
| BL3-FN-5F-1050 |  | Wall Tiling | 10d | 2015-08-14 | 2015-08-23 | BL3-FN-5F-1030 | 21d | 0d | MNHRS [1810 h]; Cash Flow [8144 h]; Tiling [181]; Excavation [10] | 8,144 |  |  |  |  | FIN |  |
| BL3-FN-5F-1060 |  | Flooring Works | 20d | 2015-08-19 | 2015-09-07 | BL3-FN-5F-1040 | 55d | 0d | MNHRS [1379.7 h]; Cash Flow [32152.3 h]; Tiling [210]; Excavation [20] | 32,152.32 |  |  |  |  | FIN |  |
| BL3-FN-5F-1070 |  | False Ceiling | 15d | 2015-08-24 | 2015-09-07 | BL3-FN-5F-1050, BL3-MEP-AC-5F-2070 FF+6d, BL3-MEP-PL-5F-2020 FF+6d, BL3-MEP-PL-5F-2040 FF+6d, BL3-MEP-AC-5F-2030 FF+6d, BL3-MEP-EL-5F-2030 FF+6d, BL3-MEP-EL-5F-2000 FF+6d, BL3-MEP-EL-5F-2010 FF+6d, BL3-MEP-EL-5F-2040 FF+6d, BL3-MEP-EL-5F-2020 FF+6d, BL3-MEP-EL-5F-2070 FF+6d | 21d | 0d | Cash Flow [63030 h]; False Ceiling [1464]; MNHRS [7320 h]; Excavation [15] | 63,030 |  |  |  |  | FIN |  |
| BL3-FN-5F-1080 |  | Hand Rails for Stairs | 15d | 2015-09-08 | 2015-09-22 | BL3-FN-5F-1070 | 21d | 0d | Cash Flow [9483.79 h]; Metal Works & Handrail [20]; MNHRS [43 h]; Excavation [15] | 9,483.79 |  |  |  |  | FIN |  |
| BL3-FN-5F-1090 |  | Doors Installation | 15d | 2015-09-23 | 2015-10-07 | BL3-FN-5F-1080, BL3-FN-4F-1090 | 21d | 0d | Cash Flow [21991.1 h]; Excavation [15] | 21,991.11 |  |  |  |  | FIN |  |
| BL3-FN-5F-1100 |  | Final Paint | 10d | 2016-01-06 | 2016-01-15 | BL3-FN-5F-1060, BL3-MEP-AC-5F-3000 FF+4d, BL3-MEP-EL-5F-3050 FF+4d, BL3-MEP-EL-5F-3020 FF+4d, BL3-MEP-EL-5F-3000 FF+4d, BL3-MEP-EL-5F-3010 FF+4d, BL3-MEP-EL-5F-3070 FF+4d, BL3-MEP-PL-5F-3000 FF+4d, BL3-MEP-PL-5F-3010 FF+4d, BL3-MEP-FF-5F-3010 FF+4d, BL3-MEP-EL-5F-3060 FF+4d, BL3-MEP-EL-5F-3030 FF+4d | 22d | 0d | Excavation [10] |  |  |  |  |  | FIN |  |
|  | 9 | **MEP Work** |  | 2015-06-22 | 2016-01-11 |  |  |  |  |  |  |  |  |  |  |  |
|  | 1 | **Mechanical System** |  | 2015-06-28 | 2016-01-11 |  |  |  |  |  |  |  |  |  |  |  |
|  | 2 | **HVAC Works** |  | 2015-06-28 | 2015-09-19 |  |  |  |  |  |  |  |  |  |  |  |
|  | 1 | **1st Fix** |  | 2015-06-28 | 2015-07-09 |  |  |  |  |  |  |  |  |  |  |  |
| BL3-MEP-AC-5F-1000 |  | Supports and Hungers Fixing | 12d | 2015-06-28 | 2015-07-09 | BL3-MEP-AC-4F-1000, BL3-FN-5F-1000 SS+3d, BL3-FN-5F-1000 FF+3d | 15d | 2d | Cash Flow [326.47 h]; Ductman [192 h]; Excavation [12] | 326.47 |  | MEP | AC | 1st Fix |  | 1f |

| ID | WBS | Activity | Duration | Start | Finish | Predecessors | Total float | Free float | Resources | Cost | Responsibility | MEP Systems | MEP Steps | Fix |
| --- | --- | --- | --- | --- | --- | --- | --- | --- | --- | --- | --- | --- | --- | --- |
|  | 3 | **2nd Fix** |  | 2015-07-12 | 2015-08-19 |  |  |  |  |  |  |  |  |  |
| BL3-MEP-AC-5F-2010 |  | Duct Installation and Insulation | 21d | 2015-07-12 | 2015-08-01 | BL3-MEP-AC-5F-1000, BL3-MEP-AC-4F-2000, BL3-FN-5F-1010 FF+4d | 14d | 0d | Cash Flow [4329.94 h]; Ductman [263 h]; Excavation [21] | 4,329.94 | MEP | AC | 2nd Fix | 2f |
| BL3-MEP-AC-5F-2020 |  | Chilled Water Pipes and Fittings Installation | 21d | 2015-07-12 | 2015-08-01 | BL3-MEP-AC-5F-1000, BL3-MEP-AC-4F-2020, BL3-FN-5F-1010 FF+4d | 13d | 0d | Cash Flow [5230.19 h]; Pipe Fitter - CHW [840 h]; Excavation [21] | 5,230.19 | MEP | AC | 2nd Fix | 2f |
| BL3-MEP-AC-5F-2000 |  | FCU's Installation | 8d | 2015-07-21 | 2015-07-28 | BL3-MEP-AC-5F-1000, BL3-MEP-AC-4F-2010, BL3-FN-5F-1010 FF+4d | 47d | 10d | Cash Flow [5992.06 h]; Pipe Fitter - CHW [192 h]; Excavation [8] | 5,992.06 | MEP | AC | 2nd Fix | 2f |
| BL3-MEP-AC-5F-2030 |  | Duct Accessories Installation | 14d | 2015-08-02 | 2015-08-15 | BL3-MEP-AC-5F-2010, BL3-MEP-AC-4F-2030 | 38d | 7d | Cash Flow [652.97 h]; Pipe Fitter - CHW [448 h]; Excavation [14] | 652.97 | MEP | AC | 2nd Fix | 2f |
| BL3-MEP-AC-5F-2040 |  | Chilled Water Pipes Pressure Test | 6d | 2015-08-02 | 2015-08-07 | BL3-MEP-AC-5F-2020 | 37d | 0d | Cash Flow [581.12 h]; Pipe Fitter - CHW [96 h]; Excavation [6] | 581.12 | MEP | AC | 2nd Fix | 2f |
| BL3-MEP-AC-5F-2050 |  | Chilled Water Pipes Insulation | 12d | 2015-08-08 | 2015-08-19 | BL3-MEP-AC-5F-2040, BL3-MEP-AC-4F-2050 | 117d | 9d | Cash Flow [1658.21 h]; Pipe Fitter - CHW [384 h]; Excavation [12] | 1,658.21 | MEP | AC | 2nd Fix | 2f |
| BL3-MEP-AC-5F-2060 |  | Valve Package Installation | 6d | 2015-08-08 | 2015-08-13 | BL3-MEP-AC-5F-2000, BL3-MEP-AC-5F-2040 | 37d | 0d | Cash Flow [2380.49 h]; Pipe Fitter - CHW [96 h]; Excavation [6] | 2,380.49 | MEP | AC | 2nd Fix | 2f |
| BL3-MEP-AC-5F-2070 |  | FCU's Drain Pipes Installation | 3d | 2015-08-14 | 2015-08-16 | BL3-MEP-AC-5F-2000, BL3-MEP-AC-5F-2060, BL3-MEP-AC-4F-2070 | 37d | 16d | Cash Flow [516.93 h]; Pipe Fitter - CHW [48 h]; Excavation [3] | 516.93 | MEP | AC | 2nd Fix | 2f |
|  | 4 | **Final Fix** |  | 2015-09-08 | 2015-09-19 |  |  |  |  |  |  |  |  |  |
| BL3-MEP-AC-5F-3000 |  | Grills and Diffusers Fixing | 12d | 2015-09-08 | 2015-09-19 | BL3-MEP-AC-4F-3000, BL3-MEP-AC-5F-2030, BL3-FN-5F-1070 | 86d | 10d | Cash Flow [11538.6 h]; Ductman [384 h]; Excavation [12] | 11,538.61 | MEP | AC | Final F | ff |
|  | 1 | **Plumbing and Drainage Works** |  | 2015-06-28 | 2015-10-27 |  |  |  |  |  |  |  |  |  |
|  | 1 | **1st Fix** |  | 2015-06-28 | 2015-07-09 |  |  |  |  |  |  |  |  |  |
| BL3-MEP-PL-5F-1000 |  | Low Level Water Supply Pipes Installation | 12d | 2015-06-28 | 2015-07-09 | BL3-MEP-PL-4F-1000, BL3-FN-5F-1000 SS+3d, BL3-FN-5F-1000 FF+3d | 24d | 2d | Cash Flow [713.22 h]; Plumber [42 h]; Excavation [12] | 713.22 | MEP | PL & D | 1st Fix | 1f |
| BL3-MEP-PL-5F-1010 |  | Low Level Drainage Pipes Installation | 12d | 2015-06-28 | 2015-07-09 | BL3-MEP-PL-4F-1010, BL3-FN-5F-1000 SS+3d, BL3-FN-5F-1000 FF+3d | 24d | 2d | Cash Flow [2279.46 h]; Plumber [12.67 h]; Excavation [12] | 2,279.46 | MEP | PL & D | 1st Fix | 1f |
| BL3-MEP-PL-5F-1020 |  | Supports installation for High level Pipes | 12d | 2015-06-28 | 2015-07-09 | BL3-MEP-PL-4F-1020, BL3-FN-5F-1000 SS+3d, BL3-FN-5F-1000 FF+3d | 24d | 2d | Cash Flow [819.68 h]; Plumber [16.35 h]; Excavation [12] | 819.68 | MEP | PL & D | 1st Fix | 1f |
|  | 3 | **2nd Fix** |  | 2015-07-12 | 2015-09-13 |  |  |  |  |  |  |  |  |  |
| BL3-MEP-PL-5F-2000 |  | High Level Water Supply Pipes and Fittings Installation | 21d | 2015-07-12 | 2015-08-01 | BL3-MEP-PL-4F-2000, BL3-MEP-PL-5F-1020, BL3-MEP-PL-5F-1000, BL3-FN-5F-1010 FF+4d | 22d | 0d | Cash Flow [1308.6 h]; Plumber [150.02 h]; Excavation [21] | 1,308.6 | MEP | PL & D | 2nd Fix | 2f |
| BL3-MEP-PL-5F-2010 |  | High Level Drainage Pipes Installation | 21d | 2015-07-12 | 2015-08-01 | BL3-MEP-PL-4F-2010, BL3-MEP-PL-5F-1020, BL3-MEP-PL-5F-1010, BL3-FN-5F-1010 FF+4d | 22d | 0d | Cash Flow [6562.53 h]; Plumber [244.38 h]; Excavation [21] | 6,562.53 | MEP | PL & D | 2nd Fix | 2f |
| BL3-MEP-PL-5F-2020 |  | Water Supply Pipes Pressure Test | 6d | 2015-08-02 | 2015-08-07 | BL3-MEP-PL-5F-2000, BL3-MEP-PL-5F-1000, BL3-MEP-PL-4F-2020 | 46d | 15d | Cash Flow [145.74 h]; Plumber [48 h]; Excavation [6] | 145.74 | MEP | PL & D | 2nd Fix | 2f |
| BL3-MEP-PL-5F-2040 |  | Drainage Pipes Gravity Test | 6d | 2015-08-02 | 2015-08-07 | BL3-MEP-PL-5F-2010, BL3-MEP-PL-5F-1010, BL3-MEP-PL-4F-2040 | 46d | 15d | Cash Flow [820.24 h]; Plumber [48 h]; Excavation [6] | 820.24 | MEP | PL & D | 2nd Fix | 2f |
| BL3-MEP-PL-5F-2030 |  | Floor Drain Installation | 6d | 2015-09-08 | 2015-09-13 | BL3-MEP-PL-4F-2030, BL3-FN-5F-1060 | 114d | 16d | Cash Flow [548.14 h]; Plumber [6 h]; Excavation [6] | 548.14 | MEP | PL & D | 1st Fix | 2f |
|  | 4 | **Final Fix** |  | 2015-10-08 | 2015-10-27 |  |  |  |  |  |  |  |  |  |
| BL3-MEP-PL-5F-3000 |  | Sanitary Ware Installation Including Connection | 14d | 2015-10-08 | 2015-10-21 | BL3-MEP-PL-4F-3000, BL3-MEP-PL-5F-2020, BL3-MEP-PL-5F-2040, BL3-FN-5F-1060, BL3-FN-5F-1050, BL3-FN-5F-1070, BL3-FN-5F-1090 | 25d | 0d | Cash Flow [4439.52 h]; Plumber [383.86 h]; Excavation [14] | 4,439.52 | MEP | PL & D | Final F | ff |
| BL3-MEP-PL-5F-3010 |  | Sanitary Ware Accessories Installation | 6d | 2015-10-22 | 2015-10-27 | BL3-MEP-PL-5F-3000, BL3-MEP-PL-4F-3010 | 65d | 16d | Cash Flow [160.22 h]; Plumber [36.45 h]; Excavation [6] | 160.22 | MEP | PL & D | Final F | ff |

| ID | WBS | Activity | Duration | Start | Finish | Predecessors | Total float | Free float | Resources | Cost | Responsibility | MEP Systems | MEP Steps | Fix |
| --- | --- | --- | --- | --- | --- | --- | --- | --- | --- | --- | --- | --- | --- | --- |
|  | 3 | **Fire Fighting Works** |  | 2016-01-06 | 2016-01-11 |  |  |  |  |  |  |  |  |  |
|  | 4 | **Final Fix** |  | 2016-01-06 | 2016-01-11 |  |  |  |  |  |  |  |  |  |
| BL3-MEP-FF-5F-3010 |  | Hose reel Cabinet Installation and Connection | 6d | 2016-01-06 | 2016-01-11 | BL3-MEP-FF-4F-3010, BL3-FN-5F-1050, BL3-FN-5F-1070 | 6d | 0d | Cash Flow [1330.85 h]; Plumber [192 h]; Excavation [6] | 1,330.85 | MEP | FF | Final F | ff |
| BL3-MEP-FF-5F-3000 |  | Fire Extinguisher Installation | 2d | 2016-01-07 | 2016-01-08 | BL3-MEP-FF-4F-3000, BL3-FN-5F-1050, BL3-FN-5F-1100 SS+1d | 22d | 4d | Cash Flow [1074.99 h]; Plumber [8 h]; Excavation [2] | 1,074.99 | MEP | FF | Final F | ff |
|  | 3 | **Electrical System** |  | 2015-06-22 | 2015-10-01 |  |  |  |  |  |  |  |  |  |
|  | 1 | **1st Fix** |  | 2015-06-22 | 2015-07-13 |  |  |  |  |  |  |  |  |  |
| BL3-MEP-EL-5F-1000 |  | PVC Back Boxes and Conduits Fixing in Wall | 22d | 2015-06-22 | 2015-07-13 | BL3-MEP-EL-4F-1000, BL3-FN-5F-1000 SS+3d, BL3-FN-5F-1000 FF+3d | 7d | 0d | Cash Flow [3307.67 h]; Electrician [384 h]; Excavation [22] | 3,307.67 | MEP | EL | 1st Fix | 1f |
| BL3-MEP-EL-5F-1010 |  | DB's Inclosure Fixing | 6d | 2015-07-04 | 2015-07-09 | BL3-MEP-EL-4F-1010, BL3-FN-5F-1000 SS+3d, BL3-FN-5F-1000 FF+3d | 29d | 12d | Cash Flow [2130.4 h]; Electrician [96 h]; Excavation [6] | 2,130.4 | MEP | EL | 1st Fix | 1f |
|  | 2 | **2nd Fix** |  | 2015-07-15 | 2015-09-03 |  |  |  |  |  |  |  |  |  |
| BL3-MEP-EL-5F-2020 |  | Cable Tray and Trunking Installation | 14d | 2015-07-15 | 2015-07-28 | BL3-MEP-EL-4F-2020, BL3-FN-5F-1010 FF+4d | 56d | 8d | Cash Flow [9064.45 h]; Electrician [336 h]; Excavation [14] | 9,064.45 | MEP | EL | 2nd Fix | 2f |
| BL3-MEP-EL-5F-2050 |  | Low Current System Wiring | 14d | 2015-07-15 | 2015-07-28 | BL3-MEP-EL-5F-1000, BL3-FN-5F-1010 FF+4d | 165d | 41d | Cash Flow [38217.8 h]; Electrician [244 h]; Excavation [14] | 38,217.78 | MEP | EL |  | 2f |
| BL3-MEP-EL-5F-2000 |  | Lighting Wiring | 12d | 2015-07-17 | 2015-07-28 | BL3-MEP-EL-5F-1000, BL3-MEP-EL-4F-2000, BL3-FN-5F-1010 FF+4d | 56d | 10d | Cash Flow [3566.08 h]; Electrician [241.71 h]; Excavation [12] | 3,566.08 | MEP | EL | 2nd Fix | 2f |
| BL3-MEP-EL-5F-2010 |  | Power Points Wiring | 12d | 2015-07-17 | 2015-07-28 | BL3-MEP-EL-5F-1000, BL3-MEP-EL-4F-2010, BL3-FN-5F-1010 FF+4d | 56d | 10d | Cash Flow [2894.21 h]; Electrician [192 h]; Excavation [12] | 2,894.21 | MEP | EL | 2nd Fix | 2f |
| BL3-MEP-EL-5F-2040 |  | Fire Alarm System Wiring | 12d | 2015-07-17 | 2015-07-28 | BL3-MEP-EL-5F-1000, BL3-MEP-EL-4F-2040, BL3-FN-5F-1010 FF+4d | 56d | 10d | Cash Flow [7111.01 h]; Electrician [192 h]; Excavation [12] | 7,111.01 | MEP | EL | 2nd Fix | 2f |
| BL3-MEP-EL-5F-2030 |  | Emergency Light Wiring | 8d | 2015-07-21 | 2015-07-28 | BL3-MEP-EL-5F-1000, BL3-MEP-EL-4F-2030, BL3-FN-5F-1010 FF+4d | 56d | 14d | Cash Flow [1202.03 h]; Electrician [128 h]; Excavation [8] | 1,202.03 | MEP | EL | 2nd Fix | 2f |
| BL3-MEP-EL-5F-2060 |  | SMDB's Installation | 6d | 2015-08-09 | 2015-08-14 | BL3-MEP-EL-5F-1000, BL3-FN-5F-1020, BL3-MEP-EL-4F-2060 | 142d | 16d | Cash Flow [4196.6 h]; Electrician [45 h]; Excavation [6] | 4,196.6 | MEP | EL | 2nd Fix | 2f |
| BL3-MEP-EL-5F-2070 |  | DB's Installation and Termination | 12d | 2015-08-09 | 2015-08-20 | BL3-MEP-EL-5F-1010, BL3-MEP-EL-4F-2070, BL3-FN-5F-1020 | 33d | 0d | Cash Flow [4970.93 h]; Electrician [288 h]; Excavation [12] | 4,970.93 | MEP | EL | 2nd Fix | 2f |
| BL3-MEP-EL-5F-3040 |  | Power Cable Puling | 14d | 2015-08-21 | 2015-09-03 | BL3-MEP-EL-4F-3040, BL3-MEP-EL-5F-2020, BL3-MEP-EL-5F-2000, BL3-MEP-EL-5F-2010, BL3-MEP-EL-5F-2070 | 75d | 4d | Cash Flow [6361.76 h]; Electrician [168 h]; Excavation [14] | 6,361.76 | MEP | EL | 2nd Fix | 2f |
|  | 3 | **Final Fix** |  | 2015-09-08 | 2015-10-01 |  |  |  |  |  |  |  |  |  |
| BL3-MEP-EL-5F-3000 |  | Lights Fitting Fixing | 14d | 2015-09-08 | 2015-09-21 | BL3-MEP-EL-5F-2000, BL3-FN-5F-1070, BL3-MEP-EL-4F-3000 | 63d | 8d | Cash Flow [7322.66 h]; Electrician [244 h]; Excavation [14] | 7,322.66 | MEP | EL | Final F | ff |
| BL3-MEP-EL-5F-3010 |  | Emergency Light Fixing | 8d | 2015-09-08 | 2015-09-15 | BL3-MEP-EL-5F-2030, BL3-FN-5F-1070, BL3-MEP-EL-4F-3010 | 110d | 14d | Cash Flow [5714.02 h]; Electrician [128 h]; Excavation [8] | 5,714.02 | MEP | EL | Final F | ff |
| BL3-MEP-EL-5F-3020 |  | Fire Alarm System Detector Installation | 12d | 2015-09-08 | 2015-09-19 | BL3-MEP-EL-5F-2040, BL3-FN-5F-1070, BL3-MEP-EL-4F-3020 | 77d | 10d | Cash Flow [4034.38 h]; Electrician [192 h]; Excavation [12] | 4,034.38 | MEP | EL | Final F | ff |
| BL3-MEP-EL-5F-3030 |  | Despature for Low Current System Installation | 14d | 2015-09-08 | 2015-09-21 | BL3-MEP-EL-5F-2050, BL3-FN-5F-1070, BL3-FN-5F-1020 | 124d | 0d | Cash Flow [72738.2 h]; Electrician [336 h]; Excavation [14] | 72,738.16 | MEP | EL |  | ff |
| BL3-MEP-EL-5F-3060 |  | SMDB's Termination and Final Connection | 6d | 2015-09-08 | 2015-09-13 | BL3-MEP-EL-5F-3040, BL3-MEP-EL-4F-3070, BL3-MEP-EL-5F-2060, BL3-FN-5F-1070 | 118d | 16d | Cash Flow [2785.83 h]; Electrician [192 h]; Excavation [6] | 2,785.82 | MEP | EL | Final F | ff |
| BL3-MEP-EL-5F-3070 |  | Sockets and Switches Fixing | 8d | 2015-09-08 | 2015-09-15 | BL3-MEP-EL-5F-2010, BL3-FN-5F-1070, BL3-MEP-EL-4F-3060 | 105d | 14d | Cash Flow [1166.96 h]; Electrician [128 h]; Excavation [8] | 1,166.96 | MEP | EL | Final F | ff |
| BL3-MEP-EL-5F-3050 |  | Low Current System Outlet installation and Connection | 10d | 2015-09-22 | 2015-10-01 | BL3-MEP-EL-5F-3030, BL3-MEP-EL-5F-2050 | 124d | 102d | Cash Flow [3860.79 h]; Electrician [80 h]; Excavation [10] | 3,860.79 | MEP | EL |  | ff |

| ID | WBS | Activity | Duration | Start | Finish | Predecessors | Total float | Free float | Resources | Cost | Structural | Responsibility | MEP Systems | MEP Steps | Finishing | Fix |
| --- | --- | --- | --- | --- | --- | --- | --- | --- | --- | --- | --- | --- | --- | --- | --- | --- |
|  | 9 | **6th Floor** |  | 2015-04-29 | 2016-01-21 |  |  |  |  |  |  |  |  |  |  |  |
|  | 1 | **Structural** |  | 2015-04-29 | 2015-05-24 |  |  |  |  |  |  |  |  |  |  |  |
| BL3-ST-6F-1000 |  | Reinforcement for Verticals | 5d | 2015-04-29 | 2015-05-04 | ENG-STR-BL3-APP290, ENG-STR-BL3-APP300, BL3-ST-5F-1070 | 0d |  | MNHRS [842.2 h]; Cash Flow [56308.2 h]; Reinforcement [44689.1]; Excavation [5] | 56,308.21 | STR |  |  |  |  |  |
| BL3-ST-6F-1010 |  | MEP Works in Vertical Element | 5d | 2015-04-29 | 2015-05-04 | ENGMEP8660, BL3-ST-6F-1000 FF | 5d |  | Cash Flow [1798.55 h]; Electrician [160 h]; Excavation [5] | 1,798.55 |  | MEP | EL | B.W |  |  |
| BL3-ST-6F-1020 |  | FW for Verticals | 5d | 2015-05-05 | 2015-05-10 | BL3-ST-6F-1000 | 0d |  | MNHRS [9250.41 h]; Cash Flow [40668.8 h]; FW [1306]; Excavation [5] | 40,668.84 | STR |  |  |  |  |  |
| BL3-ST-6F-1030 |  | Concrete Verticals | 1d | 2015-05-11 | 2015-05-11 | BL3-ST-6F-1020, BL3-ST-6F-1010 | 0d |  | MNHRS [2003.27 h]; Cash Flow [33907.1 h]; Concrete [246]; Excavation [1] | 33,907.07 | STR |  |  |  |  |  |
| BL3-ST-6F-1040 |  | FW for Slab | 5d | 2015-05-12 | 2015-05-17 | BL3-ST-6F-1030 | 0d |  | MNHRS [16202.4 h]; Cash Flow [71232.8 h]; FW [2287.5]; Excavation [5] | 71,232.75 | STR |  |  |  |  |  |
| BL3-ST-6F-1050 |  | Reinforcement for Slab | 5d | 2015-05-18 | 2015-05-23 | BL3-ST-6F-1040 | 0d |  | MNHRS [1629.17 h]; Cash Flow [108924 h]; Reinforcement [86447.4]; Excavation [5] | 108,923.67 | STR |  |  |  |  |  |
| BL3-ST-6F-1060 |  | MEP Works in Slab & Beams | 5d | 2015-05-18 | 2015-05-23 | ENGMEP8660, BL3-ST-6F-1050 FF | 0d |  | Cash Flow [3349.02 h]; Electrician [320 h]; Excavation [5] | 3,349.02 |  | MEP | EL | B.W |  |  |
| BL3-ST-6F-1070 |  | Concrete for Slab | 1d | 2015-05-24 | 2015-05-24 | BL3-ST-6F-1050, BL3-ST-6F-1060 | 0d |  | MNHRS [4319.68 h]; Cash Flow [73114.5 h]; Concrete [529.7]; Excavation [1] | 73,114.49 | STR |  |  |  |  |  |
|  | 2 | **Fiishing** |  | 2015-07-09 | 2016-01-21 |  |  |  |  |  |  |  |  |  |  |  |
| BL3-FN-6F-1000 |  | Block Works | 20d | 2015-07-09 | 2015-07-28 | BL3-ST-7F-1070 FS+12d, BL3-ST-8F-1070 | 9d | 0d | Cash Flow [23219 h]; MNHRS [1746.48 h]; BW [456]; Excavation [20] | 23,219.03 |  |  |  |  | FIN |  |
| BL3-FN-6F-1010 |  | Plaster | 18d | 2015-07-29 | 2015-08-15 | BL3-FN-6F-1000, BL3-MEP-PL-6F-1000 FF+3d, BL3-MEP-PL-6F-1010 FF+3d, BL3-MEP-EL-6F-1000 FF+3d, BL3-MEP-EL-6F-1010 FF+3d | 13d | 0d | MNHRS [2773.5 h]; Cash Flow [32597.3 h]; Plaster [924.5]; Excavation [18] | 32,597.31 |  |  |  |  | FIN |  |
| BL3-FN-6F-1020 |  | Paint 1st Coat | 15d | 2015-08-16 | 2015-08-30 | BL3-FN-6F-1010 | 14d | 0d | MNHRS [832 h]; Cash Flow [5017.38 h]; Painting [924]; Excavation [15] | 5,017.38 |  |  |  |  | FIN |  |
| BL3-FN-6F-1030 |  | Ceiling Paint | 10d | 2015-08-26 | 2015-09-04 | BL3-FN-6F-1020 SS+10d | 14d | 0d | MNHRS [40 h]; Cash Flow [239.35 h]; Painting [44]; Excavation [10] | 239.35 |  |  |  |  | FIN |  |
| BL3-FN-6F-1040 |  | Waterproofing | 5d | 2015-09-05 | 2015-09-09 | BL3-FN-6F-1030 | 47d | 0d | MNHRS [7 h]; Cash Flow [131.28 h]; Waterproofing [22.32]; Excavation [5] | 131.28 |  |  |  |  | FIN |  |
| BL3-FN-6F-1050 |  | Wall Tiling | 10d | 2015-09-05 | 2015-09-14 | BL3-FN-6F-1030 | 14d | 0d | MNHRS [1810 h]; Cash Flow [8144 h]; Tiling [181]; Excavation [10] | 8,144 |  |  |  |  | FIN |  |
| BL3-FN-6F-1060 |  | Flooring Works | 20d | 2015-09-10 | 2015-09-29 | BL3-FN-6F-1040 | 47d | 0d | MNHRS [1379.7 h]; Cash Flow [32152.3 h]; Tiling [210]; Excavation [20] | 32,152.32 |  |  |  |  | FIN |  |
| BL3-FN-6F-1070 |  | False Ceiling | 15d | 2015-09-15 | 2015-09-29 | BL3-FN-6F-1050, BL3-MEP-AC-6F-2070 FF+6d, BL3-MEP-PL-6F-2020 FF+6d, BL3-MEP-PL-6F-2040 FF+6d, BL3-MEP-AC-6F-2030 FF+6d, BL3-MEP-EL-6F-2030 FF+6d, BL3-MEP-EL-6F-2000 FF+6d, BL3-MEP-EL-6F-2010 FF+6d, BL3-MEP-EL-6F-2040 FF+6d, BL3-MEP-EL-6F-2020 FF+6d, BL3-MEP-EL-6F-2070 FF+6d | 14d | 0d | Cash Flow [63030 h]; False Ceiling [1464]; MNHRS [7320 h]; Excavation [15] | 63,030 |  |  |  |  | FIN |  |
| BL3-FN-6F-1080 |  | Hand Rails for Stairs | 15d | 2015-09-30 | 2015-10-14 | BL3-FN-6F-1070 | 14d | 0d | Cash Flow [9483.79 h]; Metal Works & Handrail [20]; MNHRS [43 h]; Excavation [15] | 9,483.79 |  |  |  |  | FIN |  |
| BL3-FN-6F-1090 |  | Doors Installation | 15d | 2015-10-15 | 2015-10-29 | BL3-FN-6F-1080, BL3-FN-5F-1090 | 14d | 0d | Cash Flow [21991.1 h]; Excavation [15] | 21,991.11 |  |  |  |  | FIN |  |
| BL3-FN-6F-1100 |  | Final Paint | 10d | 2016-01-12 | 2016-01-21 | BL3-FN-6F-1060, BL3-MEP-AC-6F-3000 FF+4d, BL3-MEP-EL-6F-3060 FF+4d, BL3-MEP-EL-6F-3020 FF+4d, BL3-MEP-EL-6F-3070 FF+4d, BL3-MEP-EL-6F-3030 FF+4d, BL3-MEP-PL-6F-3000 FF+4d, BL3-MEP-PL-6F-3010 FF+4d, BL3-MEP-FF-6F-3010 FF+4d, BL3-MEP-EL-6F-3050 FF+4d, BL3-MEP-EL-6F-3040 FF+4d | 18d | 0d | Excavation [10] |  |  |  |  |  | FIN |  |
|  | 10 | **MEP Work** |  | 2015-07-14 | 2016-01-17 |  |  |  |  |  |  |  |  |  |  |  |
|  | 1 | **Mechanical System** |  | 2015-07-20 | 2016-01-17 |  |  |  |  |  |  |  |  |  |  |  |
|  | 2 | **HVAC Works** |  | 2015-07-20 | 2015-10-11 |  |  |  |  |  |  |  |  |  |  |  |
|  | 1 | **1st Fix** |  | 2015-07-20 | 2015-07-31 |  |  |  |  |  |  |  |  |  |  |  |
| BL3-MEP-AC-6F-1000 |  | Supports and Hungers Fixing | 12d | 2015-07-20 | 2015-07-31 | BL3-MEP-AC-5F-1000, BL3-FN-6F-1000 SS+3d, BL3-FN-6F-1000 FF+3d | 14d | 1d | Cash Flow [326.47 h]; Ductman [192 h]; Excavation [12] | 326.47 |  | MEP | AC | 1st Fix |  | 1f |

| ID | WBS | Activity | Duration | Start | Finish | Predecessors | Total float | Free float | Resources | Cost | Responsibility | MEP Systems | MEP Steps | Fix |
| --- | --- | --- | --- | --- | --- | --- | --- | --- | --- | --- | --- | --- | --- | --- |
|  | 3 | **2nd Fix** |  | 2015-08-02 | 2015-09-09 |  |  |  |  |  |  |  |  |  |
| BL3-MEP-AC-6F-2000 |  | Duct Installation and Insulation | 21d | 2015-08-02 | 2015-08-22 | BL3-MEP-AC-6F-1000, BL3-MEP-AC-5F-2010, BL3-FN-6F-1010 FF+4d | 14d | 0d | Cash Flow [4329.94 h]; Ductman [263 h]; Excavation [21] | 4,329.94 | MEP | AC | 2nd Fix | 2f |
| BL3-MEP-AC-6F-2020 |  | Chilled Water Pipes and Fittings Installation | 21d | 2015-08-02 | 2015-08-22 | BL3-MEP-AC-6F-1000, BL3-MEP-AC-5F-2020, BL3-FN-6F-1010 SS+4d, BL3-FN-6F-1010 FF+4d | 13d | 0d | Cash Flow [5230.19 h]; Pipe Fitter - CHW [840 h]; Excavation [21] | 5,230.19 | MEP | AC | 2nd Fix | 2f |
| BL3-MEP-AC-6F-2010 |  | FCU's Installation | 8d | 2015-08-12 | 2015-08-19 | BL3-MEP-AC-6F-1000, BL3-MEP-AC-5F-2000, BL3-FN-6F-1010 FF+4d | 40d | 9d | Cash Flow [5992.06 h]; Pipe Fitter - CHW [192 h]; Excavation [8] | 5,992.06 | MEP | AC | 2nd Fix | 2f |
| BL3-MEP-AC-6F-2030 |  | Duct Accessories Installation | 14d | 2015-08-23 | 2015-09-05 | BL3-MEP-AC-6F-2000, BL3-MEP-AC-5F-2030 | 32d | 7d | Cash Flow [652.97 h]; Pipe Fitter - CHW [448 h]; Excavation [14] | 652.97 | MEP | AC | 2nd Fix | 2f |
| BL3-MEP-AC-6F-2040 |  | Chilled Water Pipes Pressure Test | 6d | 2015-08-23 | 2015-08-28 | BL3-MEP-AC-6F-2020 | 31d | 0d | Cash Flow [581.12 h]; Pipe Fitter - CHW [96 h]; Excavation [6] | 581.12 | MEP | AC | 2nd Fix | 2f |
| BL3-MEP-AC-6F-2050 |  | Chilled Water Pipes Insulation | 12d | 2015-08-29 | 2015-09-09 | BL3-MEP-AC-6F-2040, BL3-MEP-AC-5F-2050 | 108d | 9d | Cash Flow [1658.21 h]; Pipe Fitter - CHW [384 h]; Excavation [12] | 1,658.21 | MEP | AC | 2nd Fix | 2f |
| BL3-MEP-AC-6F-2060 |  | Valve Package Installation | 6d | 2015-08-29 | 2015-09-03 | BL3-MEP-AC-6F-2010, BL3-MEP-AC-6F-2040 | 31d | 0d | Cash Flow [2380.49 h]; Pipe Fitter - CHW [96 h]; Excavation [6] | 2,380.49 | MEP | AC | 2nd Fix | 2f |
| BL3-MEP-AC-6F-2070 |  | FCU's Drain Pipes Installation | 3d | 2015-09-04 | 2015-09-06 | BL3-MEP-AC-6F-2010, BL3-MEP-AC-6F-2060, BL3-MEP-AC-5F-2070 | 31d | 17d | Cash Flow [516.93 h]; Pipe Fitter - CHW [48 h]; Excavation [3] | 516.93 | MEP | AC | 2nd Fix | 2f |
|  | 4 | **Final Fix** |  | 2015-09-30 | 2015-10-11 |  |  |  |  |  |  |  |  |  |
| BL3-MEP-AC-6F-3000 |  | Grills and Diffusers Fixing | 12d | 2015-09-30 | 2015-10-11 | BL3-MEP-AC-5F-3000, BL3-MEP-AC-6F-2030, BL3-FN-6F-1070 | 76d | 9d | Cash Flow [11538.6 h]; Ductman [384 h]; Excavation [12] | 11,538.61 | MEP | AC | Final F | ff |
|  | 1 | **Plumbing and Drainage Works** |  | 2015-07-20 | 2015-11-18 |  |  |  |  |  |  |  |  |  |
|  | 1 | **1st Fix** |  | 2015-07-20 | 2015-07-31 |  |  |  |  |  |  |  |  |  |
| BL3-MEP-PL-6F-1000 |  | Low Level Water Supply Pipes Installation | 12d | 2015-07-20 | 2015-07-31 | BL3-MEP-PL-5F-1000, BL3-FN-6F-1000 FF+3d, BL3-FN-6F-1000 SS+3d | 23d | 1d | Cash Flow [713.22 h]; Plumber [42 h]; Excavation [12] | 713.22 | MEP | PL & D | 1st Fix | 1f |
| BL3-MEP-PL-6F-1010 |  | Low Level Drainage Pipes Installation | 12d | 2015-07-20 | 2015-07-31 | BL3-MEP-PL-5F-1010, BL3-FN-6F-1000 FF+3d, BL3-FN-6F-1000 SS+3d | 23d | 1d | Cash Flow [2279.46 h]; Plumber [12.67 h]; Excavation [12] | 2,279.46 | MEP | PL & D | 1st Fix | 1f |
| BL3-MEP-PL-6F-1020 |  | Supports installation for High level Pipes | 12d | 2015-07-20 | 2015-07-31 | BL3-MEP-PL-5F-1020, BL3-FN-6F-1000 SS+3d, BL3-FN-6F-1000 FF+3d | 23d | 1d | Cash Flow [819.68 h]; Plumber [16.35 h]; Excavation [12] | 819.68 | MEP | PL & D | 1st Fix | 1f |
|  | 3 | **2nd Fix** |  | 2015-08-02 | 2015-10-05 |  |  |  |  |  |  |  |  |  |
| BL3-MEP-PL-6F-2000 |  | High Level Water Supply Pipes and Fittings Installation | 21d | 2015-08-02 | 2015-08-22 | BL3-MEP-PL-5F-2000, BL3-MEP-PL-6F-1020, BL3-MEP-PL-6F-1000, BL3-FN-6F-1010 FF+4d | 22d | 0d | Cash Flow [1308.6 h]; Plumber [150.02 h]; Excavation [21] | 1,308.6 | MEP | PL & D | 2nd Fix | 2f |
| BL3-MEP-PL-6F-2010 |  | High Level Drainage Pipes Installation | 21d | 2015-08-02 | 2015-08-22 | BL3-MEP-PL-5F-2010, BL3-MEP-PL-6F-1020, BL3-MEP-PL-6F-1010, BL3-FN-6F-1010 FF+4d | 22d | 0d | Cash Flow [6562.53 h]; Plumber [244.38 h]; Excavation [21] | 6,562.53 | MEP | PL & D | 2nd Fix | 2f |
| BL3-MEP-PL-6F-2020 |  | Water Supply Pipes Pressure Test | 6d | 2015-08-23 | 2015-08-28 | BL3-MEP-PL-6F-2000, BL3-MEP-PL-6F-1000, BL3-MEP-PL-5F-2020 | 40d | 15d | Cash Flow [145.74 h]; Plumber [48 h]; Excavation [6] | 145.74 | MEP | PL & D | 2nd Fix | 2f |
| BL3-MEP-PL-6F-2040 |  | Drainage Pipes Gravity Test | 6d | 2015-08-23 | 2015-08-28 | BL3-MEP-PL-6F-2010, BL3-MEP-PL-6F-1010, BL3-MEP-PL-5F-2040 | 40d | 15d | Cash Flow [820.24 h]; Plumber [48 h]; Excavation [6] | 820.24 | MEP | PL & D | 2nd Fix | 2f |
| BL3-MEP-PL-6F-2030 |  | Floor Drain Installation | 6d | 2015-09-30 | 2015-10-05 | BL3-MEP-PL-5F-2030, BL3-FN-6F-1060 | 98d | 15d | Cash Flow [548.14 h]; Plumber [6 h]; Excavation [6] | 548.14 | MEP | PL & D | 1st Fix | 2f |
|  | 4 | **Final Fix** |  | 2015-10-30 | 2015-11-18 |  |  |  |  |  |  |  |  |  |
| BL3-MEP-PL-6F-3000 |  | Sanitary Ware Installation Including Connection | 14d | 2015-10-30 | 2015-11-12 | BL3-MEP-PL-5F-3000, BL3-MEP-PL-6F-2020, BL3-MEP-PL-6F-2040, BL3-FN-6F-1060, BL3-FN-6F-1050, BL3-FN-6F-1070, BL3-FN-6F-1090 | 17d | 0d | Cash Flow [4439.52 h]; Plumber [383.86 h]; Excavation [14] | 4,439.52 | MEP | PL & D | Final F | ff |
| BL3-MEP-PL-6F-3010 |  | Sanitary Ware Accessories Installation | 6d | 2015-11-13 | 2015-11-18 | BL3-MEP-PL-6F-3000, BL3-MEP-PL-5F-3010 | 49d | 15d | Cash Flow [160.22 h]; Plumber [36.45 h]; Excavation [6] | 160.22 | MEP | PL & D | Final F | ff |

| ID | WBS | Activity | Duration | Start | Finish | Predecessors | Total float | Free float | Resources | Cost | Responsibility | MEP Systems | MEP Steps | Fix |
| --- | --- | --- | --- | --- | --- | --- | --- | --- | --- | --- | --- | --- | --- | --- |
|  | 3 | **Fire Fighting Works** |  | 2016-01-12 | 2016-01-17 |  |  |  |  |  |  |  |  |  |
|  | 4 | **Final Fix** |  | 2016-01-12 | 2016-01-17 |  |  |  |  |  |  |  |  |  |
| BL3-MEP-FF-6F-3010 |  | Hose reel Cabinet Installation and Connection | 6d | 2016-01-12 | 2016-01-17 | BL3-MEP-FF-5F-3010, BL3-FN-6F-1050, BL3-FN-6F-1070 | 6d | 0d | Cash Flow [1330.85 h]; Plumber [192 h]; Excavation [6] | 1,330.85 | MEP | FF | Final F | ff |
| BL3-MEP-FF-6F-3000 |  | Fire Extinguisher Installation | 2d | 2016-01-13 | 2016-01-14 | BL3-MEP-FF-5F-3000, BL3-FN-6F-1050, BL3-FN-6F-1100 SS+1d | 18d | 4d | Cash Flow [1074.99 h]; Plumber [8 h]; Excavation [2] | 1,074.99 | MEP | FF | Final F | ff |
|  | 3 | **Electrical System** |  | 2015-07-14 | 2015-10-23 |  |  |  |  |  |  |  |  |  |
|  | 1 | **1st Fix** |  | 2015-07-14 | 2015-08-04 |  |  |  |  |  |  |  |  |  |
| BL3-MEP-EL-6F-1000 |  | PVC Back Boxes and Conduits Fixing in Wall | 22d | 2015-07-14 | 2015-08-04 | BL3-MEP-EL-5F-1000, BL3-FN-6F-1000 SS+3d, BL3-FN-6F-1000 FF+3d | 7d | 0d | Cash Flow [3307.67 h]; Electrician [384 h]; Excavation [22] | 3,307.67 | MEP | EL | 1st Fix | 1f |
| BL3-MEP-EL-6F-1010 |  | DB's Inclosure Fixing | 6d | 2015-07-26 | 2015-07-31 | BL3-MEP-EL-5F-1010, BL3-FN-6F-1000 SS+3d, BL3-FN-6F-1000 FF+3d | 25d | 12d | Cash Flow [2130.4 h]; Electrician [96 h]; Excavation [6] | 2,130.4 | MEP | EL | 1st Fix | 1f |
|  | 2 | **2nd Fix** |  | 2015-08-06 | 2015-09-25 |  |  |  |  |  |  |  |  |  |
| BL3-MEP-EL-6F-2020 |  | Cable Tray and Trunking Installation | 14d | 2015-08-06 | 2015-08-19 | BL3-MEP-EL-5F-2020, BL3-FN-6F-1010 FF+4d | 49d | 5d | Cash Flow [9064.45 h]; Electrician [336 h]; Excavation [14] | 9,064.45 | MEP | EL | 2nd Fix | 2f |
| BL3-MEP-EL-6F-2050 |  | Low Current System Wiring | 14d | 2015-08-06 | 2015-08-19 | BL3-MEP-EL-6F-1000, BL3-FN-6F-1010 FF+4d | 145d | 41d | Cash Flow [38217.8 h]; Electrician [244 h]; Excavation [14] | 38,217.78 | MEP | EL |  | 2f |
| BL3-MEP-EL-6F-2000 |  | Lighting Wiring | 12d | 2015-08-08 | 2015-08-19 | BL3-MEP-EL-5F-2000, BL3-MEP-EL-6F-1000, BL3-FN-6F-1010 FF+4d | 49d | 7d | Cash Flow [3566.08 h]; Electrician [241.71 h]; Excavation [12] | 3,566.08 | MEP | EL | 2nd Fix | 2f |
| BL3-MEP-EL-6F-2010 |  | Power Points Wiring | 12d | 2015-08-08 | 2015-08-19 | BL3-MEP-EL-5F-2010, BL3-MEP-EL-6F-1000, BL3-FN-6F-1010 FF+4d | 49d | 7d | Cash Flow [2894.21 h]; Electrician [192 h]; Excavation [12] | 2,894.21 | MEP | EL | 2nd Fix | 2f |
| BL3-MEP-EL-6F-2040 |  | Fire Alarm System Wiring | 12d | 2015-08-08 | 2015-08-19 | BL3-MEP-EL-5F-2040, BL3-MEP-EL-6F-1000, BL3-FN-6F-1010 FF+4d | 49d | 7d | Cash Flow [7111.01 h]; Electrician [192 h]; Excavation [12] | 7,111.01 | MEP | EL | 2nd Fix | 2f |
| BL3-MEP-EL-6F-2030 |  | Emergency Light Wiring | 8d | 2015-08-12 | 2015-08-19 | BL3-MEP-EL-5F-2030, BL3-MEP-EL-6F-1000, BL3-FN-6F-1010 FF+4d | 49d | 11d | Cash Flow [1202.03 h]; Electrician [128 h]; Excavation [8] | 1,202.03 | MEP | EL | 2nd Fix | 2f |
| BL3-MEP-EL-6F-2060 |  | SMDB's Installation | 6d | 2015-08-31 | 2015-09-05 | BL3-MEP-EL-6F-1000, BL3-FN-6F-1020, BL3-MEP-EL-5F-2060 | 126d | 15d | Cash Flow [4196.6 h]; Electrician [45 h]; Excavation [6] | 4,196.6 | MEP | EL | 2nd Fix | 2f |
| BL3-MEP-EL-6F-2070 |  | DB's Installation and Termination | 12d | 2015-08-31 | 2015-09-11 | BL3-MEP-EL-5F-2070, BL3-MEP-EL-6F-1010, BL3-FN-6F-1020 | 26d | 0d | Cash Flow [4970.93 h]; Electrician [288 h]; Excavation [12] | 4,970.93 | MEP | EL | 2nd Fix | 2f |
| BL3-MEP-EL-6F-3010 |  | Power Cable Puling | 14d | 2015-09-12 | 2015-09-25 | BL3-MEP-EL-5F-3040, BL3-MEP-EL-6F-2020, BL3-MEP-EL-6F-2000, BL3-MEP-EL-6F-2010, BL3-MEP-EL-6F-2070 | 67d | 4d | Cash Flow [6361.76 h]; Electrician [168 h]; Excavation [14] | 6,361.76 | MEP | EL | 2nd Fix | 2f |
|  | 3 | **Final Fix** |  | 2015-09-30 | 2015-10-23 |  |  |  |  |  |  |  |  |  |
| BL3-MEP-EL-6F-3000 |  | Lights Fitting Fixing | 14d | 2015-09-30 | 2015-10-13 | BL3-MEP-EL-6F-2000, BL3-FN-6F-1070, BL3-MEP-EL-5F-3000 | 55d | 7d | Cash Flow [7322.66 h]; Electrician [244 h]; Excavation [14] | 7,322.66 | MEP | EL | Final F | ff |
| BL3-MEP-EL-6F-3020 |  | Emergency Light Fixing | 8d | 2015-09-30 | 2015-10-07 | BL3-MEP-EL-6F-2030, BL3-FN-6F-1070, BL3-MEP-EL-5F-3010 | 96d | 13d | Cash Flow [5714.02 h]; Electrician [128 h]; Excavation [8] | 5,714.02 | MEP | EL | Final F | ff |
| BL3-MEP-EL-6F-3030 |  | Fire Alarm System Detector Installation | 12d | 2015-09-30 | 2015-10-11 | BL3-MEP-EL-6F-2040, BL3-FN-6F-1070, BL3-MEP-EL-5F-3020 | 67d | 9d | Cash Flow [4034.38 h]; Electrician [192 h]; Excavation [12] | 4,034.38 | MEP | EL | Final F | ff |
| BL3-MEP-EL-6F-3040 |  | Despature for Low Current System Installation | 14d | 2015-09-30 | 2015-10-13 | BL3-MEP-EL-6F-2050, BL3-FN-6F-1020, BL3-FN-6F-1070 | 104d | 0d | Cash Flow [72738.2 h]; Electrician [336 h]; Excavation [14] | 72,738.16 | MEP | EL |  | ff |
| BL3-MEP-EL-6F-3050 |  | SMDB's Termination and Final Connection | 6d | 2015-09-30 | 2015-10-05 | BL3-MEP-EL-6F-3010, BL3-MEP-EL-5F-3060, BL3-MEP-EL-6F-2060, BL3-FN-6F-1070 | 102d | 15d | Cash Flow [2785.83 h]; Electrician [192 h]; Excavation [6] | 2,785.82 | MEP | EL | Final F | ff |
| BL3-MEP-EL-6F-3070 |  | Sockets and Switches Fixing | 8d | 2015-09-30 | 2015-10-07 | BL3-MEP-EL-6F-2010, BL3-FN-6F-1070, BL3-MEP-EL-5F-3070 | 91d | 13d | Cash Flow [1166.96 h]; Electrician [128 h]; Excavation [8] | 1,166.96 | MEP | EL | Final F | ff |
| BL3-MEP-EL-6F-3060 |  | Low Current System Outlet installation and Connection | 10d | 2015-10-14 | 2015-10-23 | BL3-MEP-EL-6F-3040, BL3-MEP-EL-6F-2050 | 104d | 86d | Cash Flow [3860.79 h]; Electrician [80 h]; Excavation [10] | 3,860.79 | MEP | EL |  | ff |

| ID | WBS | Activity | Duration | Start | Finish | Predecessors | Total float | Free float | Resources | Cost | Structural | Responsibility | MEP Systems | MEP Steps | Finishing | Fix |
| --- | --- | --- | --- | --- | --- | --- | --- | --- | --- | --- | --- | --- | --- | --- | --- | --- |
|  | 10 | **7th Floor** |  | 2015-05-25 | 2016-01-27 |  |  |  |  |  |  |  |  |  |  |  |
|  | 1 | **Structural** |  | 2015-05-25 | 2015-06-16 |  |  |  |  |  |  |  |  |  |  |  |
| BL3-ST-7F-1000 |  | Reinforcement for Verticals | 5d | 2015-05-25 | 2015-05-30 | ENG-STR-BL3-APP310, ENG-STR-BL3-APP320, ENG-STR-BL3-APP340, ENG-STR-BL3-APP350, ENG-STR-BL3-APP330, BL3-ST-6F-1070 | 0d |  | MNHRS [842.2 h]; Cash Flow [56308.2 h]; Reinforcement [44689.1]; Excavation [5] | 56,308.21 | STR |  |  |  |  |  |
| BL3-ST-7F-1010 |  | MEP Works in Vertical Element | 5d | 2015-05-25 | 2015-05-30 | ENGMEP8660, BL3-ST-7F-1000 FF | 5d |  | Cash Flow [1798.55 h]; Electrician [160 h]; Excavation [5] | 1,798.55 |  | MEP | EL | B.W |  |  |
| BL3-ST-7F-1020 |  | FW for Verticals | 5d | 2015-05-31 | 2015-06-04 | BL3-ST-7F-1000 | 0d |  | MNHRS [9250.41 h]; Cash Flow [40668.8 h]; FW [1306]; Excavation [5] | 40,668.84 | STR |  |  |  |  |  |
| BL3-ST-7F-1030 |  | Concrete Verticals | 1d | 2015-06-05 | 2015-06-05 | BL3-ST-7F-1020, BL3-ST-7F-1010 | 0d |  | MNHRS [2003.27 h]; Cash Flow [33907.1 h]; Concrete [246]; Excavation [1] | 33,907.07 | STR |  |  |  |  |  |
| BL3-ST-7F-1040 |  | FW for Slab | 5d | 2015-06-06 | 2015-06-10 | BL3-ST-7F-1030 | 0d |  | MNHRS [16202.4 h]; Cash Flow [71232.8 h]; FW [2287.5]; Excavation [5] | 71,232.75 | STR |  |  |  |  |  |
| BL3-ST-7F-1050 |  | Reinforcement for Slab | 5d | 2015-06-11 | 2015-06-15 | BL3-ST-7F-1040 | 0d |  | MNHRS [1629.17 h]; Cash Flow [108924 h]; Reinforcement [86447.4]; Excavation [5] | 108,923.67 | STR |  |  |  |  |  |
| BL3-ST-7F-1060 |  | MEP Works in Slab & Beams | 5d | 2015-06-11 | 2015-06-15 | ENGMEP8660, BL3-ST-7F-1050 FF | 0d |  | Cash Flow [3349.02 h]; Electrician [320 h]; Excavation [5] | 3,349.02 |  | MEP | EL | B.W |  |  |
| BL3-ST-7F-1070 |  | Concrete for Slab | 1d | 2015-06-16 | 2015-06-16 | BL3-ST-7F-1050, BL3-ST-7F-1060 | 0d |  | MNHRS [4319.68 h]; Cash Flow [73114.5 h]; Concrete [529.7]; Excavation [1] | 73,114.49 | STR |  |  |  |  |  |
|  | 2 | **Fiishing** |  | 2015-07-31 | 2016-01-27 |  |  |  |  |  |  |  |  |  |  |  |
| BL3-FN-7F-1000 |  | Block Works | 19d | 2015-07-31 | 2015-08-18 | BL3-ST-8F-1070 FS+12d, BL3-ST-9F-1070 | 8d | 0d | Cash Flow [23219 h]; MNHRS [1746.48 h]; BW [456]; Excavation [19] | 23,219.03 |  |  |  |  | FIN |  |
| BL3-FN-7F-1010 |  | Plaster | 16d | 2015-08-19 | 2015-09-03 | BL3-FN-7F-1000, BL3-MEP-PL-7F-1000 FF+3d, BL3-MEP-PL-7F-1010 FF+3d, BL3-MEP-EL-7F-1010 FF+3d, BL3-MEP-EL-7F-1000 FF+3d | 8d | 0d | MNHRS [2773.5 h]; Cash Flow [32597.3 h]; Plaster [924.5]; Excavation [16] | 32,597.31 |  |  |  |  | FIN |  |
| BL3-FN-7F-1020 |  | Paint 1st Coat | 15d | 2015-09-06 | 2015-09-20 | BL3-FN-7F-1010 FS+2d | 8d | 0d | MNHRS [832 h]; Cash Flow [5017.38 h]; Painting [924]; Excavation [15] | 5,017.38 |  |  |  |  | FIN |  |
| BL3-FN-7F-1030 |  | Ceiling Paint | 10d | 2015-09-16 | 2015-09-25 | BL3-FN-7F-1020 SS+10d | 8d | 0d | MNHRS [40 h]; Cash Flow [239.35 h]; Painting [44]; Excavation [10] | 239.35 |  |  |  |  | FIN |  |
| BL3-FN-7F-1040 |  | Waterproofing | 5d | 2015-09-26 | 2015-09-30 | BL3-FN-7F-1030 | 40d | 0d | MNHRS [7 h]; Cash Flow [131.28 h]; Waterproofing [22.32]; Excavation [5] | 131.28 |  |  |  |  | FIN |  |
| BL3-FN-7F-1050 |  | Wall Tiling | 10d | 2015-09-26 | 2015-10-05 | BL3-FN-7F-1030 | 8d | 0d | MNHRS [1810 h]; Cash Flow [8144 h]; Tiling [181]; Excavation [10] | 8,144 |  |  |  |  | FIN |  |
| BL3-FN-7F-1060 |  | Flooring Works | 20d | 2015-10-01 | 2015-10-20 | BL3-FN-7F-1040 | 40d | 0d | MNHRS [1379.7 h]; Cash Flow [32152.3 h]; Tiling [210]; Excavation [20] | 32,152.32 |  |  |  |  | FIN |  |
| BL3-FN-7F-1070 |  | False Ceiling | 15d | 2015-10-06 | 2015-10-20 | BL3-FN-7F-1050, BL3-MEP-AC-7F-2070 FF+6d, BL3-MEP-PL-7F-2020 FF+6d, BL3-MEP-PL-7F-2040 FF+6d, BL3-MEP-AC-7F-2030 FF+6d, BL3-MEP-EL-7F-2030 FF+6d, BL3-MEP-EL-7F-2000 FF+6d, BL3-MEP-EL-7F-2010 FF+6d, BL3-MEP-EL-7F-2040 FF+6d, BL3-MEP-EL-7F-2020 FF+6d, BL3-MEP-EL-7F-2070 FF+6d | 8d | 0d | Cash Flow [53030.4 h]; False Ceiling [1464]; MNHRS [7320 h]; Excavation [15] | 53,030.43 |  |  |  |  | FIN |  |
| BL3-FN-7F-1080 |  | Hand Rails for Stairs | 15d | 2015-10-21 | 2015-11-04 | BL3-FN-7F-1070 | 8d | 0d | Cash Flow [9483.79 h]; Metal Works & Handrail [20]; MNHRS [43 h]; Excavation [15] | 9,483.79 |  |  |  |  | FIN |  |
| BL3-FN-7F-1090 |  | Doors Installation | 15d | 2015-11-05 | 2015-11-19 | BL3-FN-7F-1080, BL3-FN-6F-1090 | 8d | 0d | Cash Flow [21991.1 h]; Excavation [15] | 21,991.11 |  |  |  |  | FIN |  |
| BL3-FN-7F-1100 |  | Final Paint | 10d | 2016-01-18 | 2016-01-27 | BL3-FN-7F-1060, BL3-MEP-AC-7F-3000 FF+4d, BL3-MEP-EL-7F-3060 FF+4d, BL3-MEP-EL-7F-3030 FF+4d, BL3-MEP-EL-7F-3010 FF+4d, BL3-MEP-EL-7F-3020 FF+4d, BL3-MEP-EL-7F-3070 FF+4d, BL3-MEP-PL-7F-3000 FF+4d, BL3-MEP-PL-7F-3010 FF+4d, BL3-MEP-FF-7F-3010 FF+4d, BL3-MEP-EL-7F-3050 FF+4d, BL3-MEP-EL-7F-3040 FF+4d | 14d | 0d | Excavation [10] |  |  |  |  |  | FIN |  |
|  | 12 | **MEP Work** |  | 2015-08-05 | 2016-01-23 |  |  |  |  |  |  |  |  |  |  |  |
|  | 1 | **Mechanical System** |  | 2015-08-10 | 2016-01-23 |  |  |  |  |  |  |  |  |  |  |  |
|  | 2 | **HVAC Works** |  | 2015-08-10 | 2015-11-01 |  |  |  |  |  |  |  |  |  |  |  |
|  | 1 | **1st Fix** |  | 2015-08-10 | 2015-08-21 |  |  |  |  |  |  |  |  |  |  |  |
| BL3-MEP-AC-7F-1000 |  | Supports and Hungers Fixing | 12d | 2015-08-10 | 2015-08-21 | BL3-MEP-AC-6F-1000, BL3-FN-7F-1000 SS+3d, BL3-FN-7F-1000 FF+3d | 14d | 1d | Cash Flow [326.47 h]; Ductman [192 h]; Excavation [12] | 326.47 |  | MEP | AC | 1st Fix |  | 1f |

| ID | WBS | Activity | Duration | Start | Finish | Predecessors | Total float | Free float | Resources | Cost | Responsibility | MEP Systems | MEP Steps | Fix |
| --- | --- | --- | --- | --- | --- | --- | --- | --- | --- | --- | --- | --- | --- | --- |
|  | 3 | **2nd Fix** |  | 2015-08-23 | 2015-09-30 |  |  |  |  |  |  |  |  |  |
| BL3-MEP-AC-7F-2000 |  | Duct Installation and Insulation | 21d | 2015-08-23 | 2015-09-12 | BL3-MEP-AC-6F-2000, BL3-MEP-AC-7F-1000, BL3-FN-7F-1010 FF+4d | 14d | 0d | Cash Flow [4329.94 h]; Ductman [263 h]; Excavation [21] | 4,329.94 | MEP | AC | 2nd Fix | 2f |
| BL3-MEP-AC-7F-2020 |  | Chilled Water Pipes and Fittings Installation | 21d | 2015-08-23 | 2015-09-12 | BL3-MEP-AC-6F-2020, BL3-MEP-AC-7F-1000, BL3-FN-7F-1010 FF+4d | 13d | 0d | Cash Flow [5230.19 h]; Pipe Fitter - CHW [840 h]; Excavation [21] | 5,230.19 | MEP | AC | 2nd Fix | 2f |
| BL3-MEP-AC-7F-2010 |  | FCU's Installation | 8d | 2015-08-31 | 2015-09-07 | BL3-MEP-AC-6F-2010, BL3-MEP-AC-7F-1000, BL3-FN-7F-1010 FF+4d | 36d | 11d | Cash Flow [5992.06 h]; Pipe Fitter - CHW [192 h]; Excavation [8] | 5,992.06 | MEP | AC | 2nd Fix | 2f |
| BL3-MEP-AC-7F-2030 |  | Duct Accessories Installation | 14d | 2015-09-13 | 2015-09-26 | BL3-MEP-AC-7F-2000, BL3-MEP-AC-6F-2030 | 26d | 7d | Cash Flow [652.97 h]; Pipe Fitter - CHW [448 h]; Excavation [14] | 652.97 | MEP | AC | 2nd Fix | 2f |
| BL3-MEP-AC-7F-2040 |  | Chilled Water Pipes Pressure Test | 6d | 2015-09-13 | 2015-09-18 | BL3-MEP-AC-7F-2020 | 25d | 0d | Cash Flow [581.12 h]; Pipe Fitter - CHW [96 h]; Excavation [6] | 581.12 | MEP | AC | 2nd Fix | 2f |
| BL3-MEP-AC-7F-2050 |  | Chilled Water Pipes Insulation | 12d | 2015-09-19 | 2015-09-30 | BL3-MEP-AC-7F-2040, BL3-MEP-AC-6F-2050 | 99d | 9d | Cash Flow [1658.21 h]; Pipe Fitter - CHW [384 h]; Excavation [12] | 1,658.21 | MEP | AC | 2nd Fix | 2f |
| BL3-MEP-AC-7F-2060 |  | Valve Package Installation | 6d | 2015-09-19 | 2015-09-24 | BL3-MEP-AC-7F-2010, BL3-MEP-AC-7F-2040 | 25d | 0d | Cash Flow [2380.49 h]; Pipe Fitter - CHW [96 h]; Excavation [6] | 2,380.49 | MEP | AC | 2nd Fix | 2f |
| BL3-MEP-AC-7F-2070 |  | FCU's Drain Pipes Installation | 3d | 2015-09-25 | 2015-09-27 | BL3-MEP-AC-7F-2010, BL3-MEP-AC-7F-2060, BL3-MEP-AC-6F-2070 | 25d | 17d | Cash Flow [516.93 h]; Pipe Fitter - CHW [48 h]; Excavation [3] | 516.93 | MEP | AC | 2nd Fix | 2f |
|  | 4 | **Final Fix** |  | 2015-10-21 | 2015-11-01 |  |  |  |  |  |  |  |  |  |
| BL3-MEP-AC-7F-3000 |  | Grills and Diffusers Fixing | 12d | 2015-10-21 | 2015-11-01 | BL3-MEP-AC-6F-3000, BL3-MEP-AC-7F-2030, BL3-FN-7F-1070 | 67d | 7d | Cash Flow [11538.6 h]; Ductman [384 h]; Excavation [12] | 11,538.61 | MEP | AC | Final F | ff |
|  | 1 | **Plumbing and Drainage Works** |  | 2015-08-10 | 2015-12-09 |  |  |  |  |  |  |  |  |  |
|  | 1 | **1st Fix** |  | 2015-08-10 | 2015-08-21 |  |  |  |  |  |  |  |  |  |
| BL3-MEP-PL-7F-1000 |  | Low Level Water Supply Pipes Installation | 12d | 2015-08-10 | 2015-08-21 | BL3-MEP-PL-6F-1000, BL3-FN-7F-1000 SS+3d, BL3-FN-7F-1000 FF+3d | 18d | 1d | Cash Flow [713.22 h]; Plumber [42 h]; Excavation [12] | 713.22 | MEP | PL & D | 1st Fix | 1f |
| BL3-MEP-PL-7F-1010 |  | Low Level Drainage Pipes Installation | 12d | 2015-08-10 | 2015-08-21 | BL3-MEP-PL-6F-1010, BL3-FN-7F-1000 SS+3d, BL3-FN-7F-1000 FF+3d | 18d | 1d | Cash Flow [2279.46 h]; Plumber [12.67 h]; Excavation [12] | 2,279.46 | MEP | PL & D | 1st Fix | 1f |
| BL3-MEP-PL-7F-1020 |  | Supports installation for High level Pipes | 12d | 2015-08-10 | 2015-08-21 | BL3-MEP-PL-6F-1020, BL3-FN-7F-1000 SS+3d, BL3-FN-7F-1000 FF+3d | 23d | 1d | Cash Flow [819.68 h]; Plumber [16.35 h]; Excavation [12] | 819.68 | MEP | PL & D | 1st Fix | 1f |
|  | 3 | **2nd Fix** |  | 2015-08-23 | 2015-10-26 |  |  |  |  |  |  |  |  |  |
| BL3-MEP-PL-7F-2000 |  | High Level Water Supply Pipes and Fittings Installation | 21d | 2015-08-23 | 2015-09-12 | BL3-MEP-PL-6F-2000, BL3-MEP-PL-7F-1020, BL3-MEP-PL-7F-1000, BL3-FN-7F-1010 FF+4d | 22d | 0d | Cash Flow [1308.6 h]; Plumber [150.02 h]; Excavation [21] | 1,308.6 | MEP | PL & D | 2nd Fix | 2f |
| BL3-MEP-PL-7F-2010 |  | High Level Drainage Pipes Installation | 21d | 2015-08-23 | 2015-09-12 | BL3-MEP-PL-6F-2010, BL3-MEP-PL-7F-1020, BL3-MEP-PL-7F-1010, BL3-FN-7F-1010 FF+4d | 22d | 0d | Cash Flow [6562.53 h]; Plumber [244.38 h]; Excavation [21] | 6,562.53 | MEP | PL & D | 2nd Fix | 2f |
| BL3-MEP-PL-7F-2020 |  | Water Supply Pipes Pressure Test | 6d | 2015-09-13 | 2015-09-18 | BL3-MEP-PL-7F-2000, BL3-MEP-PL-6F-2020, BL3-MEP-PL-7F-1000 | 34d | 15d | Cash Flow [145.74 h]; Plumber [48 h]; Excavation [6] | 145.74 | MEP | PL & D | 2nd Fix | 2f |
| BL3-MEP-PL-7F-2040 |  | Drainage Pipes Gravity Test | 6d | 2015-09-13 | 2015-09-18 | BL3-MEP-PL-7F-2010, BL3-MEP-PL-6F-2040, BL3-MEP-PL-7F-1010 | 34d | 15d | Cash Flow [820.24 h]; Plumber [48 h]; Excavation [6] | 820.24 | MEP | PL & D | 2nd Fix | 2f |
| BL3-MEP-PL-7F-2030 |  | Floor Drain Installation | 6d | 2015-10-21 | 2015-10-26 | BL3-MEP-PL-6F-2030, BL3-FN-7F-1060 | 83d | 13d | Cash Flow [548.14 h]; Plumber [6 h]; Excavation [6] | 548.14 | MEP | PL & D | 1st Fix | 2f |
|  | 4 | **Final Fix** |  | 2015-11-20 | 2015-12-09 |  |  |  |  |  |  |  |  |  |
| BL3-MEP-PL-7F-3000 |  | Sanitary Ware Installation Including Connection | 14d | 2015-11-20 | 2015-12-03 | BL3-MEP-PL-6F-3000, BL3-MEP-PL-7F-2020, BL3-MEP-PL-7F-2040, BL3-FN-7F-1060, BL3-FN-7F-1050, BL3-FN-7F-1070, BL3-FN-7F-1090 | 10d | 0d | Cash Flow [4439.52 h]; Plumber [383.86 h]; Excavation [14] | 4,439.52 | MEP | PL & D | Final F | ff |
| BL3-MEP-PL-7F-3010 |  | Sanitary Ware Accessories Installation | 6d | 2015-12-04 | 2015-12-09 | BL3-MEP-PL-7F-3000, BL3-MEP-PL-6F-3010 | 34d | 13d | Cash Flow [160.22 h]; Plumber [36.45 h]; Excavation [6] | 160.22 | MEP | PL & D | Final F | ff |

| ID | WBS | Activity | Duration | Start | Finish | Predecessors | Total float | Free float | Resources | Cost | Responsibility | MEP Systems | MEP Steps | Fix |
| --- | --- | --- | --- | --- | --- | --- | --- | --- | --- | --- | --- | --- | --- | --- |
|  | 3 | **Fire Fighting Works** |  | 2016-01-18 | 2016-01-23 |  |  |  |  |  |  |  |  |  |
|  | 4 | **Final Fix** |  | 2016-01-18 | 2016-01-23 |  |  |  |  |  |  |  |  |  |
| BL3-MEP-FF-7F-3010 |  | Hose reel Cabinet Installation and Connection | 6d | 2016-01-18 | 2016-01-23 | BL3-MEP-FF-6F-3010, BL3-FN-7F-1050, BL3-FN-7F-1070 | 6d | 0d | Cash Flow [1330.85 h]; Plumber [192 h]; Excavation [6] | 1,330.85 | MEP | FF | Final F | ff |
| BL3-MEP-FF-7F-3000 |  | Fire Extinguisher Installation | 2d | 2016-01-19 | 2016-01-20 | BL3-MEP-FF-6F-3000, BL3-FN-7F-1050, BL3-FN-7F-1100 SS+1d | 14d | 4d | Cash Flow [1074.99 h]; Plumber [8 h]; Excavation [2] | 1,074.99 | MEP | FF | Final F | ff |
|  | 3 | **Electrical System** |  | 2015-08-05 | 2015-11-13 |  |  |  |  |  |  |  |  |  |
|  | 1 | **1st Fix** |  | 2015-08-05 | 2015-08-26 |  |  |  |  |  |  |  |  |  |
| BL3-MEP-EL-7F-1000 |  | PVC Back Boxes and Conduits Fixing in Wall | 22d | 2015-08-05 | 2015-08-26 | BL3-MEP-EL-6F-1000, BL3-FN-7F-1000 SS+3d, BL3-FN-7F-1000 FF+3d | 7d | 0d | Cash Flow [3307.67 h]; Electrician [384 h]; Excavation [22] | 3,307.67 | MEP | EL | 1st Fix | 1f |
| BL3-MEP-EL-7F-1010 |  | DB's Inclosure Fixing | 6d | 2015-08-16 | 2015-08-21 | BL3-MEP-EL-6F-1010, BL3-FN-7F-1000 SS+3d, BL3-FN-7F-1000 FF+3d | 18d | 10d | Cash Flow [2130.4 h]; Electrician [96 h]; Excavation [6] | 2,130.4 | MEP | EL | 1st Fix | 1f |
|  | 2 | **2nd Fix** |  | 2015-08-25 | 2015-10-16 |  |  |  |  |  |  |  |  |  |
| BL3-MEP-EL-7F-2020 |  | Cable Tray and Trunking Installation | 14d | 2015-08-25 | 2015-09-07 | BL3-MEP-EL-6F-2020, BL3-FN-7F-1010 FF+4d | 45d | 6d | Cash Flow [9064.45 h]; Electrician [336 h]; Excavation [14] | 9,064.45 | MEP | EL | 2nd Fix | 2f |
| BL3-MEP-EL-7F-2000 |  | Lighting Wiring | 12d | 2015-08-27 | 2015-09-07 | BL3-MEP-EL-6F-2000, BL3-MEP-EL-7F-1000, BL3-FN-7F-1010 FF+4d | 45d | 10d | Cash Flow [3566.08 h]; Electrician [241.71 h]; Excavation [12] | 3,566.08 | MEP | EL | 2nd Fix | 2f |
| BL3-MEP-EL-7F-2010 |  | Power Points Wiring | 12d | 2015-08-27 | 2015-09-07 | BL3-MEP-EL-6F-2010, BL3-MEP-EL-7F-1000, BL3-FN-7F-1010 FF+4d | 45d | 10d | Cash Flow [2894.21 h]; Electrician [192 h]; Excavation [12] | 2,894.21 | MEP | EL | 2nd Fix | 2f |
| BL3-MEP-EL-7F-2040 |  | Fire Alarm System Wiring | 12d | 2015-08-27 | 2015-09-07 | BL3-MEP-EL-6F-2040, BL3-MEP-EL-7F-1000, BL3-FN-7F-1010 FF+4d | 45d | 10d | Cash Flow [7111.01 h]; Electrician [192 h]; Excavation [12] | 7,111.01 | MEP | EL | 2nd Fix | 2f |
| BL3-MEP-EL-7F-2050 |  | Low Current System Wiring | 14d | 2015-08-27 | 2015-09-09 | BL3-MEP-EL-7F-1000, BL3-FN-7F-1010 FF+4d | 126d | 41d | Cash Flow [38217.8 h]; Electrician [244 h]; Excavation [14] | 38,217.78 | MEP | EL |  | 2f |
| BL3-MEP-EL-7F-2030 |  | Emergency Light Wiring | 8d | 2015-08-31 | 2015-09-07 | BL3-MEP-EL-6F-2030, BL3-MEP-EL-7F-1000, BL3-FN-7F-1010 FF+4d | 45d | 12d | Cash Flow [1202.03 h]; Electrician [128 h]; Excavation [8] | 1,202.03 | MEP | EL | 2nd Fix | 2f |
| BL3-MEP-EL-7F-2060 |  | SMDB's Installation | 6d | 2015-09-21 | 2015-09-26 | BL3-MEP-EL-7F-1000, BL3-FN-7F-1020, BL3-MEP-EL-6F-2060 | 111d | 13d | Cash Flow [4196.6 h]; Electrician [45 h]; Excavation [6] | 4,196.6 | MEP | EL | 2nd Fix | 2f |
| BL3-MEP-EL-7F-2070 |  | DB's Installation and Termination | 12d | 2015-09-21 | 2015-10-02 | BL3-MEP-EL-6F-2070, BL3-MEP-EL-7F-1010, BL3-FN-7F-1020 | 20d | 0d | Cash Flow [4970.93 h]; Electrician [288 h]; Excavation [12] | 4,970.93 | MEP | EL | 2nd Fix | 2f |
| BL3-MEP-EL-7F-3000 |  | Power Cable Puling | 14d | 2015-10-03 | 2015-10-16 | BL3-MEP-EL-6F-3010, BL3-MEP-EL-7F-2020, BL3-MEP-EL-7F-2000, BL3-MEP-EL-7F-2010, BL3-MEP-EL-7F-2070 | 60d | 4d | Cash Flow [6361.76 h]; Electrician [168 h]; Excavation [14] | 6,361.76 | MEP | EL | 2nd Fix | 2f |
|  | 3 | **Final Fix** |  | 2015-10-21 | 2015-11-13 |  |  |  |  |  |  |  |  |  |
| BL3-MEP-EL-7F-3010 |  | Lights Fitting Fixing | 14d | 2015-10-21 | 2015-11-03 | BL3-MEP-EL-6F-3000, BL3-MEP-EL-7F-2000, BL3-FN-7F-1070, BL3-MEP-EL-6F-3000 FF | 48d | 5d | Cash Flow [7322.66 h]; Electrician [244 h]; Excavation [14] | 7,322.66 | MEP | EL | Final F | ff |
| BL3-MEP-EL-7F-3020 |  | Emergency Light Fixing | 8d | 2015-10-21 | 2015-10-28 | BL3-MEP-EL-7F-2030, BL3-FN-7F-1070, BL3-MEP-EL-6F-3020 | 83d | 11d | Cash Flow [5714.02 h]; Electrician [128 h]; Excavation [8] | 5,714.02 | MEP | EL | Final F | ff |
| BL3-MEP-EL-7F-3030 |  | Fire Alarm System Detector Installation | 12d | 2015-10-21 | 2015-11-01 | BL3-MEP-EL-7F-2040, BL3-FN-7F-1070, BL3-MEP-EL-6F-3030 | 58d | 7d | Cash Flow [4034.38 h]; Electrician [192 h]; Excavation [12] | 4,034.38 | MEP | EL | Final F | ff |
| BL3-MEP-EL-7F-3040 |  | Despature for Low Current System Installation | 14d | 2015-10-21 | 2015-11-03 | BL3-MEP-EL-7F-2050, BL3-FN-7F-1020, BL3-FN-7F-1070 | 85d | 0d | Cash Flow [72738.2 h]; Electrician [336 h]; Excavation [14] | 72,738.16 | MEP | EL |  | ff |
| BL3-MEP-EL-7F-3050 |  | SMDB's Termination and Final Connection | 6d | 2015-10-21 | 2015-10-26 | BL3-MEP-EL-7F-3000, BL3-MEP-EL-6F-3050, BL3-MEP-EL-7F-2060, BL3-FN-7F-1070 | 87d | 13d | Cash Flow [2785.83 h]; Electrician [192 h]; Excavation [6] | 2,785.82 | MEP | EL | Final F | ff |
| BL3-MEP-EL-7F-3070 |  | Sockets and Switches Fixing | 8d | 2015-10-21 | 2015-10-28 | BL3-MEP-EL-7F-2010, BL3-FN-7F-1070, BL3-MEP-EL-6F-3070 | 78d | 11d | Cash Flow [1166.96 h]; Electrician [128 h]; Excavation [8] | 1,166.96 | MEP | EL | Final F | ff |
| BL3-MEP-EL-7F-3060 |  | Low Current System Outlet installation and Connection | 10d | 2015-11-04 | 2015-11-13 | BL3-MEP-EL-7F-3040, BL3-MEP-EL-7F-2050 | 85d | 71d | Cash Flow [3860.79 h]; Electrician [80 h]; Excavation [10] | 3,860.79 | MEP | EL |  | ff |

| ID | WBS | Activity | Duration | Start | Finish | Predecessors | Total float | Free float | Resources | Cost | Structural | Responsibility | MEP Systems | MEP Steps | Finishing | Fix |
| --- | --- | --- | --- | --- | --- | --- | --- | --- | --- | --- | --- | --- | --- | --- | --- | --- |
|  | 11 | **8th Floor** |  | 2015-06-17 | 2016-02-02 |  |  |  |  |  |  |  |  |  |  |  |
|  | 1 | **Structural** |  | 2015-06-17 | 2015-07-08 |  |  |  |  |  |  |  |  |  |  |  |
| BL3-ST-8F-1000 |  | Reinforcement for Verticals | 5d | 2015-06-17 | 2015-06-21 | ENG-STR-BL3-APP360, ENG-STR-BL3-APP370, BL3-ST-7F-1070 | 0d |  | MNHRS [842.2 h]; Cash Flow [56308.2 h]; Reinforcement [44689.1]; Excavation [5] | 56,308.21 | STR |  |  |  |  |  |
| BL3-ST-8F-1010 |  | MEP Works in Vertical Element | 5d | 2015-06-17 | 2015-06-21 | ENGMEP8660, BL3-ST-8F-1000 FF | 5d |  | Cash Flow [1798.55 h]; Electrician [160 h]; Excavation [5] | 1,798.55 |  | MEP | EL | B.W |  |  |
| BL3-ST-8F-1020 |  | FW for Verticals | 5d | 2015-06-22 | 2015-06-26 | BL3-ST-8F-1000 | 0d |  | MNHRS [9250.41 h]; Cash Flow [40668.8 h]; FW [1306]; Excavation [5] | 40,668.84 | STR |  |  |  |  |  |
| BL3-ST-8F-1030 |  | Concrete Verticals | 1d | 2015-06-27 | 2015-06-27 | BL3-ST-8F-1020, BL3-ST-8F-1010 | 0d |  | MNHRS [2003.27 h]; Cash Flow [33907.1 h]; Concrete [246]; Excavation [1] | 33,907.07 | STR |  |  |  |  |  |
| BL3-ST-8F-1040 |  | FW for Slab | 5d | 2015-06-28 | 2015-07-02 | BL3-ST-8F-1030 | 0d |  | MNHRS [16202.4 h]; Cash Flow [71232.8 h]; FW [2287.5]; Excavation [5] | 71,232.75 | STR |  |  |  |  |  |
| BL3-ST-8F-1050 |  | Reinforcement for Slab | 5d | 2015-07-03 | 2015-07-07 | BL3-ST-8F-1040 | 0d |  | MNHRS [1629.17 h]; Cash Flow [108924 h]; Reinforcement [86447.4]; Excavation [5] | 108,923.67 | STR |  |  |  |  |  |
| BL3-ST-8F-1060 |  | MEP Works in Slab & Beams | 5d | 2015-07-03 | 2015-07-07 | ENGMEP8660, BL3-ST-8F-1050 FF | 0d |  | Cash Flow [3349.02 h]; Electrician [320 h]; Excavation [5] | 3,349.02 |  | MEP | EL | B.W |  |  |
| BL3-ST-8F-1070 |  | Concrete for Slab | 1d | 2015-07-08 | 2015-07-08 | BL3-ST-8F-1050, BL3-ST-8F-1060 | 0d |  | MNHRS [4319.68 h]; Cash Flow [73114.5 h]; Concrete [529.7]; Excavation [1] | 73,114.49 | STR |  |  |  |  |  |
|  | 2 | **Fiishing** |  | 2015-08-22 | 2016-02-02 |  |  |  |  |  |  |  |  |  |  |  |
| BL3-FN-8F-1000 |  | Block Works | 18d | 2015-08-22 | 2015-09-08 | BL3-ST-9F-1070 FS+12d, BL3-ST-10F-1070 | 4d | 0d | Cash Flow [23219 h]; MNHRS [1746.48 h]; BW [456]; Excavation [18] | 23,219.03 |  |  |  |  | FIN |  |
| BL3-FN-8F-1010 |  | Plaster | 15d | 2015-09-09 | 2015-09-23 | BL3-FN-8F-1000, BL3-MEP-PL-8F-1000 FF+3d, BL3-MEP-PL-8F-1010 FF+3d, BL3-MEP-EL-8F-1000 FF+3d, BL3-MEP-EL-8F-1010 FF+3d | 4d | 0d | MNHRS [2773.5 h]; Cash Flow [32597.3 h]; Plaster [924.5]; Excavation [15] | 32,597.31 |  |  |  |  | FIN |  |
| BL3-FN-8F-1020 |  | Paint 1st Coat | 15d | 2015-09-25 | 2015-10-09 | BL3-FN-8F-1010 FS+1d | 4d | 0d | MNHRS [832 h]; Cash Flow [5017.38 h]; Painting [924]; Excavation [15] | 5,017.38 |  |  |  |  | FIN |  |
| BL3-FN-8F-1030 |  | Ceiling Paint | 10d | 2015-10-05 | 2015-10-14 | BL3-FN-8F-1020 SS+10d | 4d | 0d | MNHRS [40 h]; Cash Flow [239.35 h]; Painting [44]; Excavation [10] | 239.35 |  |  |  |  | FIN |  |
| BL3-FN-8F-1040 |  | Waterproofing | 5d | 2015-10-15 | 2015-10-19 | BL3-FN-8F-1030 | 35d | 0d | MNHRS [7 h]; Cash Flow [131.28 h]; Waterproofing [22.32]; Excavation [5] | 131.28 |  |  |  |  | FIN |  |
| BL3-FN-8F-1050 |  | Wall Tiling | 10d | 2015-10-15 | 2015-10-24 | BL3-FN-8F-1030 | 4d | 0d | MNHRS [1810 h]; Cash Flow [8144 h]; Tiling [181]; Excavation [10] | 8,144 |  |  |  |  | FIN |  |
| BL3-FN-8F-1060 |  | Flooring Works | 20d | 2015-10-20 | 2015-11-08 | BL3-FN-8F-1040 | 35d | 0d | MNHRS [1379.7 h]; Cash Flow [32152.3 h]; Tiling [210]; Excavation [20] | 32,152.32 |  |  |  |  | FIN |  |
| BL3-FN-8F-1070 |  | False Ceiling | 15d | 2015-10-25 | 2015-11-08 | BL3-FN-8F-1050, BL3-MEP-AC-8F-2070 FF+6d, BL3-MEP-PL-8F-2020 FF+6d, BL3-MEP-PL-8F-2040 FF+6d, BL3-MEP-AC-8F-2030 FF+6d, BL3-MEP-EL-8F-2030 FF+6d, BL3-MEP-EL-8F-2000 FF+6d, BL3-MEP-EL-8F-2010 FF+6d, BL3-MEP-EL-8F-2040 FF+6d, BL3-MEP-EL-8F-2020 FF+6d, BL3-MEP-EL-8F-2070 FF+6d | 4d | 0d | Cash Flow [63030 h]; False Ceiling [1464]; MNHRS [7320 h]; Excavation [15] | 63,030 |  |  |  |  | FIN |  |
| BL3-FN-8F-1080 |  | Hand Rails for Stairs | 15d | 2015-11-09 | 2015-11-23 | BL3-FN-8F-1070 | 4d | 0d | Cash Flow [9483.79 h]; Metal Works & Handrail [20]; MNHRS [43 h]; Excavation [15] | 9,483.79 |  |  |  |  | FIN |  |
| BL3-FN-8F-1090 |  | Doors Installation | 15d | 2015-11-24 | 2015-12-08 | BL3-FN-8F-1080, BL3-FN-7F-1090 | 4d | 0d | Cash Flow [21991.1 h]; Excavation [15] | 21,991.11 |  |  |  |  | FIN |  |
| BL3-FN-8F-1100 |  | Final Paint | 10d | 2016-01-24 | 2016-02-02 | BL3-FN-8F-1060, BL3-MEP-AC-8F-3000 FF+4d, BL3-MEP-EL-8F-3060 FF+4d, BL3-MEP-EL-8F-3040 FF+4d, BL3-MEP-EL-8F-3020 FF+4d, BL3-MEP-EL-8F-3030 FF+4d, BL3-MEP-EL-8F-3070 FF+4d, BL3-MEP-PL-8F-3000 FF+4d, BL3-MEP-PL-8F-3010 FF+4d, BL3-MEP-FF-8F-3010 FF+4d, BL3-MEP-EL-8F-3010 FF+4d, BL3-MEP-EL-8F-3050 FF+4d | 10d | 0d | Excavation [10] |  |  |  |  |  | FIN |  |
|  | 13 | **MEP Work** |  | 2015-08-27 | 2016-01-29 |  |  |  |  |  |  |  |  |  |  |  |
|  | 1 | **Mechanical System** |  | 2015-08-31 | 2016-01-29 |  |  |  |  |  |  |  |  |  |  |  |
|  | 2 | **HVAC Works** |  | 2015-08-31 | 2015-11-20 |  |  |  |  |  |  |  |  |  |  |  |
|  | 1 | **1st Fix** |  | 2015-08-31 | 2015-09-11 |  |  |  |  |  |  |  |  |  |  |  |
| BL3-MEP-AC-8F-1000 |  | Supports and Hungers Fixing | 12d | 2015-08-31 | 2015-09-11 | BL3-MEP-AC-7F-1000, BL3-FN-8F-1000 SS+3d, BL3-FN-8F-1000 FF+3d | 14d | 1d | Cash Flow [326.47 h]; Ductman [192 h]; Excavation [12] | 326.47 |  | MEP | AC | 1st Fix |  | 1f |

| ID | WBS | Activity | Duration | Start | Finish | Predecessors | Total float | Free float | Resources | Cost | Responsibility | MEP Systems | MEP Steps | Fix |
| --- | --- | --- | --- | --- | --- | --- | --- | --- | --- | --- | --- | --- | --- | --- |
|  | 3 | **2nd Fix** |  | 2015-09-13 | 2015-10-21 |  |  |  |  |  |  |  |  |  |
| BL3-MEP-AC-8F-2000 |  | Duct Installation and Insulation | 21d | 2015-09-13 | 2015-10-03 | BL3-MEP-AC-7F-2000, BL3-MEP-AC-8F-1000, BL3-FN-8F-1010 FF+4d | 14d | 0d | Cash Flow [4329.94 h]; Ductman [263 h]; Excavation [21] | 4,329.94 | MEP | AC | 2nd Fix | 2f |
| BL3-MEP-AC-8F-2020 |  | Chilled Water Pipes and Fittings Installation | 21d | 2015-09-13 | 2015-10-03 | BL3-MEP-AC-7F-2020, BL3-MEP-AC-8F-1000, BL3-FN-8F-1010 FF+4d | 13d | 0d | Cash Flow [5230.19 h]; Pipe Fitter - CHW [840 h]; Excavation [21] | 5,230.19 | MEP | AC | 2nd Fix | 2f |
| BL3-MEP-AC-8F-2010 |  | FCU's Installation | 8d | 2015-09-20 | 2015-09-27 | BL3-MEP-AC-7F-2010, BL3-MEP-AC-8F-1000, BL3-FN-8F-1010 FF+4d | 31d | 12d | Cash Flow [5992.06 h]; Pipe Fitter - CHW [192 h]; Excavation [8] | 5,992.06 | MEP | AC | 2nd Fix | 2f |
| BL3-MEP-AC-8F-2030 |  | Duct Accessories Installation | 14d | 2015-10-04 | 2015-10-17 | BL3-MEP-AC-8F-2000, BL3-MEP-AC-7F-2030 | 20d | 7d | Cash Flow [652.97 h]; Pipe Fitter - CHW [448 h]; Excavation [14] | 652.97 | MEP | AC | 2nd Fix | 2f |
| BL3-MEP-AC-8F-2040 |  | Chilled Water Pipes Pressure Test | 6d | 2015-10-04 | 2015-10-09 | BL3-MEP-AC-8F-2020 | 19d | 0d | Cash Flow [581.12 h]; Pipe Fitter - CHW [96 h]; Excavation [6] | 581.12 | MEP | AC | 2nd Fix | 2f |
| BL3-MEP-AC-8F-2050 |  | Chilled Water Pipes Insulation | 12d | 2015-10-10 | 2015-10-21 | BL3-MEP-AC-8F-2040, BL3-MEP-AC-7F-2050 | 90d | 9d | Cash Flow [1658.21 h]; Pipe Fitter - CHW [384 h]; Excavation [12] | 1,658.21 | MEP | AC | 2nd Fix | 2f |
| BL3-MEP-AC-8F-2060 |  | Valve Package Installation | 6d | 2015-10-10 | 2015-10-15 | BL3-MEP-AC-8F-2010, BL3-MEP-AC-8F-2040 | 19d | 0d | Cash Flow [2380.49 h]; Pipe Fitter - CHW [96 h]; Excavation [6] | 2,380.49 | MEP | AC | 2nd Fix | 2f |
| BL3-MEP-AC-8F-2070 |  | FCU's Drain Pipes Installation | 3d | 2015-10-16 | 2015-10-18 | BL3-MEP-AC-8F-2010, BL3-MEP-AC-8F-2060, BL3-MEP-AC-7F-2070 | 19d | 15d | Cash Flow [516.93 h]; Pipe Fitter - CHW [48 h]; Excavation [3] | 516.93 | MEP | AC | 2nd Fix | 2f |
|  | 4 | **Final Fix** |  | 2015-11-09 | 2015-11-20 |  |  |  |  |  |  |  |  |  |
| BL3-MEP-AC-8F-3000 |  | Grills and Diffusers Fixing | 12d | 2015-11-09 | 2015-11-20 | BL3-MEP-AC-7F-3000, BL3-MEP-AC-8F-2030, BL3-FN-8F-1070 | 60d | 5d | Cash Flow [11538.6 h]; Ductman [384 h]; Excavation [12] | 11,538.61 | MEP | AC | Final F | ff |
|  | 1 | **Plumbing and Drainage Works** |  | 2015-08-31 | 2015-12-28 |  |  |  |  |  |  |  |  |  |
|  | 1 | **1st Fix** |  | 2015-08-31 | 2015-09-11 |  |  |  |  |  |  |  |  |  |
| BL3-MEP-PL-8F-1000 |  | Low Level Water Supply Pipes Installation | 12d | 2015-08-31 | 2015-09-11 | BL3-MEP-PL-7F-1000, BL3-FN-8F-1000 SS+3d, BL3-FN-8F-1000 FF+3d | 13d | 1d | Cash Flow [713.22 h]; Plumber [42 h]; Excavation [12] | 713.22 | MEP | PL & D | 1st Fix | 1f |
| BL3-MEP-PL-8F-1010 |  | Low Level Drainage Pipes Installation | 12d | 2015-08-31 | 2015-09-11 | BL3-MEP-PL-7F-1010, BL3-FN-8F-1000 SS+3d, BL3-FN-8F-1000 FF+3d | 13d | 1d | Cash Flow [2279.46 h]; Plumber [12.67 h]; Excavation [12] | 2,279.46 | MEP | PL & D | 1st Fix | 1f |
| BL3-MEP-PL-8F-1020 |  | Supports installation for High level Pipes | 12d | 2015-08-31 | 2015-09-11 | BL3-MEP-PL-7F-1020, BL3-FN-8F-1000 SS+3d, BL3-FN-8F-1000 FF+3d | 23d | 1d | Cash Flow [819.68 h]; Plumber [16.35 h]; Excavation [12] | 819.68 | MEP | PL & D | 1st Fix | 1f |
|  | 3 | **2nd Fix** |  | 2015-09-13 | 2015-11-14 |  |  |  |  |  |  |  |  |  |
| BL3-MEP-PL-8F-2000 |  | High Level Water Supply Pipes and Fittings Installation | 21d | 2015-09-13 | 2015-10-03 | BL3-MEP-PL-7F-2000, BL3-MEP-PL-8F-1020, BL3-MEP-PL-8F-1000, BL3-FN-8F-1010 FF+4d | 22d | 0d | Cash Flow [1308.6 h]; Plumber [150.02 h]; Excavation [21] | 1,308.6 | MEP | PL & D | 2nd Fix | 2f |
| BL3-MEP-PL-8F-2010 |  | High Level Drainage Pipes Installation | 21d | 2015-09-13 | 2015-10-03 | BL3-MEP-PL-7F-2010, BL3-MEP-PL-8F-1020, BL3-MEP-PL-8F-1010, BL3-FN-8F-1010 FF+4d | 22d | 0d | Cash Flow [6562.53 h]; Plumber [244.38 h]; Excavation [21] | 6,562.53 | MEP | PL & D | 2nd Fix | 2f |
| BL3-MEP-PL-8F-2020 |  | Water Supply Pipes Pressure Test | 6d | 2015-10-04 | 2015-10-09 | BL3-MEP-PL-8F-2000, BL3-MEP-PL-7F-2020, BL3-MEP-PL-8F-1000 | 28d | 15d | Cash Flow [145.74 h]; Plumber [48 h]; Excavation [6] | 145.74 | MEP | PL & D | 2nd Fix | 2f |
| BL3-MEP-PL-8F-2040 |  | Drainage Pipes Gravity Test | 6d | 2015-10-04 | 2015-10-09 | BL3-MEP-PL-8F-2010, BL3-MEP-PL-7F-2040, BL3-MEP-PL-8F-1010 | 28d | 15d | Cash Flow [820.24 h]; Plumber [48 h]; Excavation [6] | 820.24 | MEP | PL & D | 2nd Fix | 2f |
| BL3-MEP-PL-8F-2030 |  | Floor Drain Installation | 6d | 2015-11-09 | 2015-11-14 | BL3-MEP-PL-7F-2030, BL3-FN-8F-1060 | 70d | 11d | Cash Flow [548.14 h]; Plumber [6 h]; Excavation [6] | 548.14 | MEP | PL & D | 1st Fix | 2f |
|  | 4 | **Final Fix** |  | 2015-12-09 | 2015-12-28 |  |  |  |  |  |  |  |  |  |
| BL3-MEP-PL-8F-3000 |  | Sanitary Ware Installation Including Connection | 14d | 2015-12-09 | 2015-12-22 | BL3-MEP-PL-7F-3000, BL3-MEP-PL-8F-2020, BL3-MEP-PL-8F-2040, BL3-FN-8F-1060, BL3-FN-8F-1050, BL3-FN-8F-1070, BL3-FN-8F-1090 | 5d | 0d | Cash Flow [4439.52 h]; Plumber [383.86 h]; Excavation [14] | 4,439.52 | MEP | PL & D | Final F | ff |
| BL3-MEP-PL-8F-3010 |  | Sanitary Ware Accessories Installation | 6d | 2015-12-23 | 2015-12-28 | BL3-MEP-PL-8F-3000, BL3-MEP-PL-7F-3010 | 21d | 11d | Cash Flow [160.22 h]; Plumber [36.45 h]; Excavation [6] | 160.22 | MEP | PL & D | Final F | ff |

| ID | WBS | Activity | Duration | Start | Finish | Predecessors | Total float | Free float | Resources | Cost | Responsibility | MEP Systems | MEP Steps | Fix |
| --- | --- | --- | --- | --- | --- | --- | --- | --- | --- | --- | --- | --- | --- | --- |
|  | 3 | **Fire Fighting Works** |  | 2016-01-24 | 2016-01-29 |  |  |  |  |  |  |  |  |  |
|  | 4 | **Final Fix** |  | 2016-01-24 | 2016-01-29 |  |  |  |  |  |  |  |  |  |
| BL3-MEP-FF-8F-3010 |  | Hose reel Cabinet Installation and Connection | 6d | 2016-01-24 | 2016-01-29 | BL3-MEP-FF-7F-3010, BL3-FN-8F-1050, BL3-FN-8F-1070 | 6d | 0d | Cash Flow [1330.85 h]; Plumber [192 h]; Excavation [6] | 1,330.85 | MEP | FF | Final F | ff |
| BL3-MEP-FF-8F-3000 |  | Fire Extinguisher Installation | 2d | 2016-01-25 | 2016-01-26 | BL3-MEP-FF-7F-3000, BL3-FN-8F-1050, BL3-FN-8F-1100 SS+1d | 10d | 4d | Cash Flow [1074.99 h]; Plumber [8 h]; Excavation [2] | 1,074.99 | MEP | FF | Final F | ff |
|  | 3 | **Electrical System** |  | 2015-08-27 | 2015-12-02 |  |  |  |  |  |  |  |  |  |
|  | 1 | **1st Fix** |  | 2015-08-27 | 2015-09-17 |  |  |  |  |  |  |  |  |  |
| BL3-MEP-EL-8F-1000 |  | PVC Back Boxes and Conduits Fixing in Wall | 22d | 2015-08-27 | 2015-09-17 | BL3-MEP-EL-7F-1000, BL3-FN-8F-1000 SS+3d, BL3-FN-8F-1000 FF+3d | 7d | 0d | Cash Flow [3307.67 h]; Electrician [384 h]; Excavation [22] | 3,307.67 | MEP | EL | 1st Fix | 1f |
| BL3-MEP-EL-8F-1010 |  | DB's Inclosure Fixing | 6d | 2015-09-06 | 2015-09-11 | BL3-MEP-EL-7F-1010, BL3-FN-8F-1000 SS+3d, BL3-FN-8F-1000 FF+3d | 13d | 9d | Cash Flow [2130.4 h]; Electrician [96 h]; Excavation [6] | 2,130.4 | MEP | EL | 1st Fix | 1f |
|  | 2 | **2nd Fix** |  | 2015-09-14 | 2015-11-04 |  |  |  |  |  |  |  |  |  |
| BL3-MEP-EL-8F-2020 |  | Cable Tray and Trunking Installation | 14d | 2015-09-14 | 2015-09-27 | BL3-MEP-EL-7F-2020, BL3-FN-8F-1010 FF+4d | 40d | 8d | Cash Flow [9064.45 h]; Electrician [336 h]; Excavation [14] | 9,064.45 | MEP | EL | 2nd Fix | 2f |
| BL3-MEP-EL-8F-2000 |  | Lighting Wiring | 12d | 2015-09-18 | 2015-09-29 | BL3-MEP-EL-7F-2000, BL3-MEP-EL-8F-1000, BL3-FN-8F-1010 FF+4d | 38d | 8d | Cash Flow [3566.08 h]; Electrician [241.71 h]; Excavation [12] | 3,566.08 | MEP | EL | 2nd Fix | 2f |
| BL3-MEP-EL-8F-2010 |  | Power Points Wiring | 12d | 2015-09-18 | 2015-09-29 | BL3-MEP-EL-7F-2010, BL3-MEP-EL-8F-1000, BL3-FN-8F-1010 FF+4d | 38d | 8d | Cash Flow [2894.21 h]; Electrician [192 h]; Excavation [12] | 2,894.21 | MEP | EL | 2nd Fix | 2f |
| BL3-MEP-EL-8F-2040 |  | Fire Alarm System Wiring | 12d | 2015-09-18 | 2015-09-29 | BL3-MEP-EL-7F-2040, BL3-MEP-EL-8F-1000, BL3-FN-8F-1010 FF+4d | 38d | 8d | Cash Flow [7111.01 h]; Electrician [192 h]; Excavation [12] | 7,111.01 | MEP | EL | 2nd Fix | 2f |
| BL3-MEP-EL-8F-2050 |  | Low Current System Wiring | 14d | 2015-09-18 | 2015-10-01 | BL3-MEP-EL-8F-1000, BL3-FN-8F-1010 FF+4d | 106d | 38d | Cash Flow [38217.8 h]; Electrician [244 h]; Excavation [14] | 38,217.78 | MEP | EL |  | 2f |
| BL3-MEP-EL-8F-2030 |  | Emergency Light Wiring | 8d | 2015-09-20 | 2015-09-27 | BL3-MEP-EL-7F-2030, BL3-MEP-EL-8F-1000, BL3-FN-8F-1010 FF+4d | 40d | 14d | Cash Flow [1202.03 h]; Electrician [128 h]; Excavation [8] | 1,202.03 | MEP | EL | 2nd Fix | 2f |
| BL3-MEP-EL-8F-2060 |  | SMDB's Installation | 6d | 2015-10-10 | 2015-10-15 | BL3-MEP-EL-8F-1000, BL3-FN-8F-1020, BL3-MEP-EL-7F-2060 | 98d | 15d | Cash Flow [4196.6 h]; Electrician [45 h]; Excavation [6] | 4,196.6 | MEP | EL | 2nd Fix | 2f |
| BL3-MEP-EL-8F-2070 |  | DB's Installation and Termination | 12d | 2015-10-10 | 2015-10-21 | BL3-MEP-EL-7F-2070, BL3-MEP-EL-8F-1010, BL3-FN-8F-1020 | 16d | 0d | Cash Flow [4970.93 h]; Electrician [288 h]; Excavation [12] | 4,970.93 | MEP | EL | 2nd Fix | 2f |
| BL3-MEP-EL-8F-3000 |  | Power Cable Puling | 14d | 2015-10-22 | 2015-11-04 | BL3-MEP-EL-7F-3000, BL3-MEP-EL-8F-2020, BL3-MEP-EL-8F-2000, BL3-MEP-EL-8F-2010, BL3-MEP-EL-8F-2070 | 55d | 4d | Cash Flow [6361.76 h]; Electrician [168 h]; Excavation [14] | 6,361.76 | MEP | EL | 2nd Fix | 2f |
|  | 3 | **Final Fix** |  | 2015-11-09 | 2015-12-02 |  |  |  |  |  |  |  |  |  |
| BL3-MEP-EL-8F-3010 |  | SMDB's Termination and Final Connection | 6d | 2015-11-09 | 2015-11-14 | BL3-MEP-EL-8F-3000, BL3-MEP-EL-7F-3050, BL3-MEP-EL-8F-2060, BL3-FN-8F-1070 | 74d | 11d | Cash Flow [2785.83 h]; Electrician [192 h]; Excavation [6] | 2,785.82 | MEP | EL | Final F | ff |
| BL3-MEP-EL-8F-3020 |  | Lights Fitting Fixing | 14d | 2015-11-09 | 2015-11-22 | BL3-MEP-EL-8F-2000, BL3-FN-8F-1070, BL3-MEP-EL-7F-3010 | 43d | 3d | Cash Flow [7322.66 h]; Electrician [244 h]; Excavation [14] | 7,322.66 | MEP | EL | Final F | ff |
| BL3-MEP-EL-8F-3030 |  | Emergency Light Fixing | 8d | 2015-11-09 | 2015-11-16 | BL3-MEP-EL-8F-2030, BL3-FN-8F-1070, BL3-MEP-EL-7F-3020 | 72d | 9d | Cash Flow [5714.02 h]; Electrician [128 h]; Excavation [8] | 5,714.02 | MEP | EL | Final F | ff |
| BL3-MEP-EL-8F-3040 |  | Fire Alarm System Detector Installation | 12d | 2015-11-09 | 2015-11-20 | BL3-MEP-EL-8F-2040, BL3-FN-8F-1070, BL3-MEP-EL-7F-3030 | 51d | 5d | Cash Flow [4034.38 h]; Electrician [192 h]; Excavation [12] | 4,034.38 | MEP | EL | Final F | ff |
| BL3-MEP-EL-8F-3050 |  | Despature for Low Current System Installation | 14d | 2015-11-09 | 2015-11-22 | BL3-MEP-EL-8F-2050, BL3-FN-8F-1020, BL3-FN-8F-1070 | 68d | 0d | Cash Flow [72738.2 h]; Electrician [336 h]; Excavation [14] | 72,738.16 | MEP | EL |  | ff |
| BL3-MEP-EL-8F-3070 |  | Sockets and Switches Fixing | 8d | 2015-11-09 | 2015-11-16 | BL3-MEP-EL-8F-2010, BL3-FN-8F-1070, BL3-MEP-EL-7F-3070 | 67d | 9d | Cash Flow [1166.96 h]; Electrician [128 h]; Excavation [8] | 1,166.96 | MEP | EL | Final F | ff |
| BL3-MEP-EL-8F-3060 |  | Low Current System Outlet installation and Connection | 10d | 2015-11-23 | 2015-12-02 | BL3-MEP-EL-8F-3050, BL3-MEP-EL-8F-2050 | 68d | 58d | Cash Flow [3860.79 h]; Electrician [80 h]; Excavation [10] | 3,860.79 | MEP | EL |  | ff |

| ID | WBS | Activity | Duration | Start | Finish | Predecessors | Total float | Free float | Resources | Cost | Structural | Responsibility | MEP Systems | MEP Steps | Finishing | Fix |
| --- | --- | --- | --- | --- | --- | --- | --- | --- | --- | --- | --- | --- | --- | --- | --- | --- |
|  | 12 | **9th Floor** |  | 2015-07-09 | 2016-02-08 |  |  |  |  |  |  |  |  |  |  |  |
|  | 1 | **Structural** |  | 2015-07-09 | 2015-07-30 |  |  |  |  |  |  |  |  |  |  |  |
| BL3-ST-9F-1000 |  | Reinforcement for Verticals | 5d | 2015-07-09 | 2015-07-13 | ENG-STR-BL3-APP380, ENG-STR-BL3-APP390, ENG-STR-BL3-APP400, ENG-STR-BL3-APP410, ENG-STR-BL3-APP420, BL3-ST-8F-1070 | 0d |  | MNHRS [842.2 h]; Cash Flow [56308.2 h]; Reinforcement [44689.1]; Excavation [5] | 56,308.21 | STR |  |  |  |  |  |
| BL3-ST-9F-1010 |  | MEP Works in Vertical Element | 5d | 2015-07-09 | 2015-07-13 | ENGMEP8660, BL3-ST-9F-1000 FF | 5d |  | Cash Flow [1798.55 h]; Electrician [160 h]; Excavation [5] | 1,798.55 |  | MEP | EL | B.W |  |  |
| BL3-ST-9F-1020 |  | FW for Verticals | 5d | 2015-07-14 | 2015-07-18 | BL3-ST-9F-1000 | 0d |  | MNHRS [9250.41 h]; Cash Flow [40668.8 h]; FW [1306]; Excavation [5] | 40,668.84 | STR |  |  |  |  |  |
| BL3-ST-9F-1030 |  | Concrete Verticals | 1d | 2015-07-19 | 2015-07-19 | BL3-ST-9F-1020, BL3-ST-9F-1010 | 0d |  | MNHRS [2003.27 h]; Cash Flow [33907.1 h]; Concrete [246]; Excavation [1] | 33,907.07 | STR |  |  |  |  |  |
| BL3-ST-9F-1040 |  | FW for Slab | 5d | 2015-07-20 | 2015-07-24 | BL3-ST-9F-1030 | 0d |  | MNHRS [16202.4 h]; Cash Flow [71232.8 h]; FW [2287.5]; Excavation [5] | 71,232.75 | STR |  |  |  |  |  |
| BL3-ST-9F-1050 |  | Reinforcement for Slab | 5d | 2015-07-25 | 2015-07-29 | BL3-ST-9F-1040 | 0d |  | MNHRS [1629.17 h]; Cash Flow [108924 h]; Reinforcement [86447.4]; Excavation [5] | 108,923.67 | STR |  |  |  |  |  |
| BL3-ST-9F-1060 |  | MEP Works in Slab & Beams | 5d | 2015-07-25 | 2015-07-29 | ENGMEP8660, BL3-ST-9F-1050 FF | 0d |  | Cash Flow [3349.02 h]; Electrician [320 h]; Excavation [5] | 3,349.02 |  | MEP | EL | B.W |  |  |
| BL3-ST-9F-1070 |  | Concrete for Slab | 1d | 2015-07-30 | 2015-07-30 | BL3-ST-9F-1050, BL3-ST-9F-1060 | 0d |  | MNHRS [4319.68 h]; Cash Flow [73114.5 h]; Concrete [529.7]; Excavation [1] | 73,114.49 | STR |  |  |  |  |  |
|  | 2 | **Fiishing** |  | 2015-09-13 | 2016-02-08 |  |  |  |  |  |  |  |  |  |  |  |
| BL3-FN-9F-1000 |  | Block Works | 18d | 2015-09-13 | 2015-09-30 | BL3-ST-10F-1070 FS+12d, BL3-ST-11F-1070 | 2d | 0d | Cash Flow [23219 h]; MNHRS [1746.48 h]; BW [456]; Excavation [18] | 23,219.03 |  |  |  |  | FIN |  |
| BL3-FN-9F-1010 |  | Plaster | 15d | 2015-10-01 | 2015-10-15 | BL3-FN-9F-1000, BL3-MEP-EL-9F-1000 FF+3d, BL3-MEP-EL-9F-1010 FF+3d, BL3-MEP-PL-9F-1000 FF+3d, BL3-MEP-PL-9F-1010 FF+3d | 2d | 0d | MNHRS [2773.5 h]; Cash Flow [32597.3 h]; Plaster [924.5]; Excavation [15] | 32,597.31 |  |  |  |  | FIN |  |
| BL3-FN-9F-1020 |  | Paint 1st Coat | 15d | 2015-10-16 | 2015-10-30 | BL3-FN-9F-1010 | 2d | 0d | MNHRS [832 h]; Cash Flow [5017.38 h]; Painting [924]; Excavation [15] | 5,017.38 |  |  |  |  | FIN |  |
| BL3-FN-9F-1030 |  | Ceiling Paint | 10d | 2015-10-22 | 2015-10-31 | BL3-FN-9F-1020 SS+6d | 2d | 0d | MNHRS [40 h]; Cash Flow [239.35 h]; Painting [44]; Excavation [10] | 239.35 |  |  |  |  | FIN |  |
| BL3-FN-9F-1040 |  | Waterproofing | 5d | 2015-11-01 | 2015-11-05 | BL3-FN-9F-1030 | 32d | 0d | MNHRS [7 h]; Cash Flow [131.28 h]; Waterproofing [22.32]; Excavation [5] | 131.28 |  |  |  |  | FIN |  |
| BL3-FN-9F-1050 |  | Wall Tiling | 10d | 2015-11-01 | 2015-11-10 | BL3-FN-9F-1030 | 2d | 0d | MNHRS [1810 h]; Cash Flow [8144 h]; Tiling [181]; Excavation [10] | 8,144 |  |  |  |  | FIN |  |
| BL3-FN-9F-1060 |  | Flooring Works | 20d | 2015-11-06 | 2015-11-25 | BL3-FN-9F-1040 | 32d | 0d | MNHRS [1379.7 h]; Cash Flow [32152.3 h]; Tiling [210]; Excavation [20] | 32,152.32 |  |  |  |  | FIN |  |
| BL3-FN-9F-1070 |  | False Ceiling | 15d | 2015-11-11 | 2015-11-25 | BL3-FN-9F-1050, BL3-MEP-AC-9F-2070 FF+6d, BL3-MEP-PL-9F-2020 FF+6d, BL3-MEP-PL-9F-2040 FF+6d, BL3-MEP-AC-9F-2030 FF+6d, BL3-MEP-EL-9F-2030 FF+6d, BL3-MEP-EL-9F-2000 FF+6d, BL3-MEP-EL-9F-2010 FF+6d, BL3-MEP-EL-9F-2040 FF+6d, BL3-MEP-EL-9F-2020 FF+6d, BL3-MEP-EL-9F-2070 FF+6d | 2d | 0d | Cash Flow [63030 h]; False Ceiling [1464]; MNHRS [7320 h]; Excavation [15] | 63,030 |  |  |  |  | FIN |  |
| BL3-FN-9F-1080 |  | Hand Rails for Stairs | 15d | 2015-11-26 | 2015-12-10 | BL3-FN-9F-1070 | 2d | 0d | Cash Flow [9483.79 h]; Metal Works & Handrail [20]; MNHRS [43 h]; Excavation [15] | 9,483.79 |  |  |  |  | FIN |  |
| BL3-FN-9F-1090 |  | Doors Installation | 15d | 2015-12-11 | 2015-12-25 | BL3-FN-9F-1080, BL3-FN-8F-1090 | 2d | 0d | Cash Flow [21991.1 h]; Excavation [15] | 21,991.11 |  |  |  |  | FIN |  |
| BL3-FN-9F-1100 |  | Final Paint | 10d | 2016-01-30 | 2016-02-08 | BL3-FN-9F-1060, BL3-MEP-AC-9F-3000 FF+4d, BL3-MEP-EL-9F-3060 FF+4d, BL3-MEP-EL-9F-3040 FF+4d, BL3-MEP-EL-9F-3020 FF+4d, BL3-MEP-EL-9F-3030 FF+4d, BL3-MEP-EL-9F-3070 FF+4d, BL3-MEP-PL-9F-3000 FF+4d, BL3-MEP-PL-9F-3010 FF+4d, BL3-MEP-FF-9F-3010 FF+4d, BL3-MEP-EL-9F-3010 FF+4d, BL3-MEP-EL-9F-3050 FF+4d | 6d | 0d | Excavation [10] |  |  |  |  |  | FIN |  |
|  | 14 | **MEP Work** |  | 2015-09-22 | 2016-02-04 |  |  |  |  |  |  |  |  |  |  |  |
|  | 1 | **Mechanical System** |  | 2015-09-22 | 2016-02-04 |  |  |  |  |  |  |  |  |  |  |  |
|  | 2 | **HVAC Works** |  | 2015-09-22 | 2015-12-07 |  |  |  |  |  |  |  |  |  |  |  |
|  | 1 | **1st Fix** |  | 2015-09-22 | 2015-10-03 |  |  |  |  |  |  |  |  |  |  |  |
| BL3-MEP-AC-9F-1000 |  | Supports and Hungers Fixing | 12d | 2015-09-22 | 2015-10-03 | BL3-MEP-AC-8F-1000, BL3-FN-9F-1000 SS+3d, BL3-FN-9F-1000 FF+3d | 13d | 0d | Cash Flow [326.47 h]; Ductman [192 h]; Excavation [12] | 326.47 |  | MEP | AC | 1st Fix |  | 1f |

| ID | WBS | Activity | Duration | Start | Finish | Predecessors | Total float | Free float | Resources | Cost | Responsibility | MEP Systems | MEP Steps | Fix |
| --- | --- | --- | --- | --- | --- | --- | --- | --- | --- | --- | --- | --- | --- | --- |
|  | 3 | **2nd Fix** |  | 2015-10-04 | 2015-11-11 |  |  |  |  |  |  |  |  |  |
| BL3-MEP-AC-9F-2010 |  | Duct Installation and Insulation | 21d | 2015-10-04 | 2015-10-24 | BL3-MEP-AC-8F-2000, BL3-MEP-AC-9F-1000, BL3-FN-9F-1010 FF+4d | 14d | 0d | Cash Flow [4329.94 h]; Ductman [263 h]; Excavation [21] | 4,329.94 | MEP | AC | 2nd Fix | 2f |
| BL3-MEP-AC-9F-2020 |  | Chilled Water Pipes and Fittings Installation | 21d | 2015-10-04 | 2015-10-24 | BL3-MEP-AC-8F-2020, BL3-MEP-AC-9F-1000, BL3-FN-9F-1010 FF+4d | 13d | 0d | Cash Flow [5230.19 h]; Pipe Fitter - CHW [840 h]; Excavation [21] | 5,230.19 | MEP | AC | 2nd Fix | 2f |
| BL3-MEP-AC-9F-2000 |  | FCU's Installation | 8d | 2015-10-12 | 2015-10-19 | BL3-MEP-AC-8F-2010, BL3-MEP-AC-9F-1000, BL3-FN-9F-1010 FF+4d | 24d | 5d | Cash Flow [5992.06 h]; Pipe Fitter - CHW [192 h]; Excavation [8] | 5,992.06 | MEP | AC | 2nd Fix | 2f |
| BL3-MEP-AC-9F-2030 |  | Duct Accessories Installation | 14d | 2015-10-25 | 2015-11-07 | BL3-MEP-AC-9F-2010, BL3-MEP-AC-8F-2030 | 14d | 7d | Cash Flow [652.97 h]; Pipe Fitter - CHW [448 h]; Excavation [14] | 652.97 | MEP | AC | 2nd Fix | 2f |
| BL3-MEP-AC-9F-2040 |  | Chilled Water Pipes Pressure Test | 6d | 2015-10-25 | 2015-10-30 | BL3-MEP-AC-9F-2020 | 13d | 0d | Cash Flow [581.12 h]; Pipe Fitter - CHW [96 h]; Excavation [6] | 581.12 | MEP | AC | 2nd Fix | 2f |
| BL3-MEP-AC-9F-2050 |  | Chilled Water Pipes Insulation | 12d | 2015-10-31 | 2015-11-11 | BL3-MEP-AC-9F-2040, BL3-MEP-AC-8F-2050 | 81d | 9d | Cash Flow [1658.21 h]; Pipe Fitter - CHW [384 h]; Excavation [12] | 1,658.21 | MEP | AC | 2nd Fix | 2f |
| BL3-MEP-AC-9F-2060 |  | Valve Package Installation | 6d | 2015-10-31 | 2015-11-05 | BL3-MEP-AC-9F-2000, BL3-MEP-AC-9F-2040 | 13d | 0d | Cash Flow [2380.49 h]; Pipe Fitter - CHW [96 h]; Excavation [6] | 2,380.49 | MEP | AC | 2nd Fix | 2f |
| BL3-MEP-AC-9F-2070 |  | FCU's Drain Pipes Installation | 3d | 2015-11-06 | 2015-11-08 | BL3-MEP-AC-9F-2000, BL3-MEP-AC-9F-2060, BL3-MEP-AC-8F-2070 | 13d | 11d | Cash Flow [516.93 h]; Pipe Fitter - CHW [48 h]; Excavation [3] | 516.93 | MEP | AC | 2nd Fix | 2f |
|  | 4 | **Final Fix** |  | 2015-11-26 | 2015-12-07 |  |  |  |  |  |  |  |  |  |
| BL3-MEP-AC-9F-3000 |  | Grills and Diffusers Fixing | 12d | 2015-11-26 | 2015-12-07 | BL3-MEP-AC-8F-3000, BL3-MEP-AC-9F-2030, BL3-FN-9F-1070 | 55d | 15d | Cash Flow [11538.6 h]; Ductman [384 h]; Excavation [12] | 11,538.61 | MEP | AC | Final F | ff |
|  | 1 | **Plumbing and Drainage Works** |  | 2015-09-22 | 2016-01-14 |  |  |  |  |  |  |  |  |  |
|  | 1 | **1st Fix** |  | 2015-09-22 | 2015-10-03 |  |  |  |  |  |  |  |  |  |
| BL3-MEP-PL-9F-1000 |  | Low Level Water Supply Pipes Installation | 12d | 2015-09-22 | 2015-10-03 | BL3-MEP-PL-8F-1000, BL3-FN-9F-1000 SS+3d, BL3-FN-9F-1000 FF+3d | 11d | 0d | Cash Flow [713.22 h]; Plumber [42 h]; Excavation [12] | 713.22 | MEP | PL & D | 1st Fix | 1f |
| BL3-MEP-PL-9F-1010 |  | Low Level Drainage Pipes Installation | 12d | 2015-09-22 | 2015-10-03 | BL3-MEP-PL-8F-1010, BL3-FN-9F-1000 SS+3d, BL3-FN-9F-1000 FF+3d | 11d | 0d | Cash Flow [2279.46 h]; Plumber [12.67 h]; Excavation [12] | 2,279.46 | MEP | PL & D | 1st Fix | 1f |
| BL3-MEP-PL-9F-1020 |  | Supports installation for High level Pipes | 12d | 2015-09-22 | 2015-10-03 | BL3-MEP-PL-8F-1020, BL3-FN-9F-1000 SS+3d, BL3-FN-9F-1000 FF+3d | 22d | 0d | Cash Flow [819.68 h]; Plumber [16.35 h]; Excavation [12] | 819.68 | MEP | PL & D | 1st Fix | 1f |
|  | 3 | **2nd Fix** |  | 2015-10-04 | 2015-12-01 |  |  |  |  |  |  |  |  |  |
| BL3-MEP-PL-9F-2000 |  | High Level Water Supply Pipes and Fittings Installation | 21d | 2015-10-04 | 2015-10-24 | BL3-MEP-PL-8F-2000, BL3-MEP-PL-9F-1020, BL3-MEP-PL-9F-1000, BL3-FN-9F-1010 FF+4d | 22d | 0d | Cash Flow [1308.6 h]; Plumber [150.02 h]; Excavation [21] | 1,308.6 | MEP | PL & D | 2nd Fix | 2f |
| BL3-MEP-PL-9F-2010 |  | High Level Drainage Pipes Installation | 21d | 2015-10-04 | 2015-10-24 | BL3-MEP-PL-8F-2010, BL3-MEP-PL-9F-1020, BL3-MEP-PL-9F-1010, BL3-FN-9F-1010 FF+4d | 22d | 0d | Cash Flow [6562.53 h]; Plumber [244.38 h]; Excavation [21] | 6,562.53 | MEP | PL & D | 2nd Fix | 2f |
| BL3-MEP-PL-9F-2020 |  | Water Supply Pipes Pressure Test | 6d | 2015-10-25 | 2015-10-30 | BL3-MEP-PL-9F-2000, BL3-MEP-PL-8F-2020, BL3-MEP-PL-9F-1000 | 22d | 15d | Cash Flow [145.74 h]; Plumber [48 h]; Excavation [6] | 145.74 | MEP | PL & D | 2nd Fix | 2f |
| BL3-MEP-PL-9F-2040 |  | Drainage Pipes Gravity Test | 6d | 2015-10-25 | 2015-10-30 | BL3-MEP-PL-9F-2010, BL3-MEP-PL-8F-2040, BL3-MEP-PL-9F-1010 | 22d | 15d | Cash Flow [820.24 h]; Plumber [48 h]; Excavation [6] | 820.24 | MEP | PL & D | 2nd Fix | 2f |
| BL3-MEP-PL-9F-2030 |  | Floor Drain Installation | 6d | 2015-11-26 | 2015-12-01 | BL3-MEP-PL-8F-2030, BL3-FN-9F-1060 | 59d | 19d | Cash Flow [548.14 h]; Plumber [6 h]; Excavation [6] | 548.14 | MEP | PL & D | 1st Fix | 2f |
|  | 4 | **Final Fix** |  | 2015-12-26 | 2016-01-14 |  |  |  |  |  |  |  |  |  |
| BL3-MEP-PL-9F-3000 |  | Sanitary Ware Installation Including Connection | 14d | 2015-12-26 | 2016-01-08 | BL3-MEP-PL-8F-3000, BL3-MEP-PL-9F-2020, BL3-MEP-PL-9F-2040, BL3-FN-9F-1060, BL3-FN-9F-1050, BL3-FN-9F-1070, BL3-FN-9F-1090 | 2d | 0d | Cash Flow [4439.52 h]; Plumber [383.86 h]; Excavation [14] | 4,439.52 | MEP | PL & D | Final F | ff |
| BL3-MEP-PL-9F-3010 |  | Sanitary Ware Accessories Installation | 6d | 2016-01-09 | 2016-01-14 | BL3-MEP-PL-9F-3000, BL3-MEP-PL-8F-3010 | 10d |  | Cash Flow [160.22 h]; Plumber [36.45 h]; Excavation [6] | 160.22 | MEP | PL & D | Final F | ff |

| ID | WBS | Activity | Duration | Start | Finish | Predecessors | Total float | Free float | Resources | Cost | Responsibility | MEP Systems | MEP Steps | Fix |
| --- | --- | --- | --- | --- | --- | --- | --- | --- | --- | --- | --- | --- | --- | --- |
|  | 3 | **Fire Fighting Works** |  | 2016-01-30 | 2016-02-04 |  |  |  |  |  |  |  |  |  |
|  | 4 | **Final Fix** |  | 2016-01-30 | 2016-02-04 |  |  |  |  |  |  |  |  |  |
| BL3-MEP-FF-9F-3010 |  | Hose reel Cabinet Installation and Connection | 6d | 2016-01-30 | 2016-02-04 | BL3-MEP-FF-8F-3010, BL3-FN-9F-1050, BL3-FN-9F-1070 | 6d | 0d | Cash Flow [1330.85 h]; Plumber [192 h]; Excavation [6] | 1,330.85 | MEP | FF | Final F | ff |
| BL3-MEP-FF-9F-3000 |  | Fire Extinguisher Installation | 2d | 2016-01-31 | 2016-02-01 | BL3-MEP-FF-8F-3000, BL3-FN-9F-1050, BL3-FN-9F-1100 SS+1d | 6d | 0d | Cash Flow [1074.99 h]; Plumber [8 h]; Excavation [2] | 1,074.99 | MEP | FF | Final F | ff |
|  | 3 | **Electrical System** |  | 2015-09-22 | 2015-12-19 |  |  |  |  |  |  |  |  |  |
|  | 1 | **1st Fix** |  | 2015-09-22 | 2015-10-03 |  |  |  |  |  |  |  |  |  |
| BL3-MEP-EL-9F-1000 |  | PVC Back Boxes and Conduits Fixing in Wall | 12d | 2015-09-22 | 2015-10-03 | BL3-MEP-EL-8F-1000, BL3-FN-9F-1000 SS+3d, BL3-FN-9F-1000 FF+3d | 3d | 0d | Cash Flow [3307.67 h]; Electrician [384 h]; Excavation [12] | 3,307.67 | MEP | EL | 1st Fix | 1f |
| BL3-MEP-EL-9F-1010 |  | DB's Inclosure Fixing | 6d | 2015-09-28 | 2015-10-03 | BL3-MEP-EL-8F-1010, BL3-FN-9F-1000 SS+3d, BL3-FN-9F-1000 FF+3d | 11d | 8d | Cash Flow [2130.4 h]; Electrician [96 h]; Excavation [6] | 2,130.4 | MEP | EL | 1st Fix | 1f |
|  | 2 | **2nd Fix** |  | 2015-10-06 | 2015-11-25 |  |  |  |  |  |  |  |  |  |
| BL3-MEP-EL-9F-2020 |  | Cable Tray and Trunking Installation | 14d | 2015-10-06 | 2015-10-19 | BL3-MEP-EL-8F-2020, BL3-FN-9F-1010 FF+4d | 33d | 0d | Cash Flow [9064.45 h]; Electrician [336 h]; Excavation [14] | 9,064.45 | MEP | EL | 2nd Fix | 2f |
| BL3-MEP-EL-9F-2050 |  | Low Current System Wiring | 14d | 2015-10-06 | 2015-10-19 | BL3-MEP-EL-9F-1000, BL3-FN-9F-1010 FF+4d | 90d | 37d | Cash Flow [38217.8 h]; Electrician [244 h]; Excavation [14] | 38,217.78 | MEP | EL |  | 2f |
| BL3-MEP-EL-9F-2000 |  | Lighting Wiring | 12d | 2015-10-08 | 2015-10-19 | BL3-MEP-EL-8F-2000, BL3-MEP-EL-9F-1000, BL3-FN-9F-1010 FF+4d | 33d | 2d | Cash Flow [3566.08 h]; Electrician [241.71 h]; Excavation [12] | 3,566.08 | MEP | EL | 2nd Fix | 2f |
| BL3-MEP-EL-9F-2010 |  | Power Points Wiring | 12d | 2015-10-08 | 2015-10-19 | BL3-MEP-EL-8F-2010, BL3-MEP-EL-9F-1000, BL3-FN-9F-1010 FF+4d | 33d | 2d | Cash Flow [2894.21 h]; Electrician [192 h]; Excavation [12] | 2,894.21 | MEP | EL | 2nd Fix | 2f |
| BL3-MEP-EL-9F-2040 |  | Fire Alarm System Wiring | 12d | 2015-10-08 | 2015-10-19 | BL3-MEP-EL-8F-2040, BL3-MEP-EL-9F-1000, BL3-FN-9F-1010 FF+4d | 33d | 2d | Cash Flow [7111.01 h]; Electrician [192 h]; Excavation [12] | 7,111.01 | MEP | EL | 2nd Fix | 2f |
| BL3-MEP-EL-9F-2030 |  | Emergency Light Wiring | 8d | 2015-10-12 | 2015-10-19 | BL3-MEP-EL-8F-2030, BL3-MEP-EL-9F-1000, BL3-FN-9F-1010 FF+4d | 33d | 5d | Cash Flow [1202.03 h]; Electrician [128 h]; Excavation [8] | 1,202.03 | MEP | EL | 2nd Fix | 2f |
| BL3-MEP-EL-9F-2060 |  | SMDB's Installation | 6d | 2015-10-31 | 2015-11-05 | BL3-MEP-EL-9F-1000, BL3-FN-9F-1020, BL3-MEP-EL-8F-2060 | 83d | 4d | Cash Flow [4196.6 h]; Electrician [45 h]; Excavation [6] | 4,196.6 | MEP | EL | 2nd Fix | 2f |
| BL3-MEP-EL-9F-2070 |  | DB's Installation and Termination | 12d | 2015-10-31 | 2015-11-11 | BL3-MEP-EL-8F-2070, BL3-MEP-EL-9F-1010, BL3-FN-9F-1020 | 10d | 0d | Cash Flow [4970.93 h]; Electrician [288 h]; Excavation [12] | 4,970.93 | MEP | EL | 2nd Fix | 2f |
| BL3-MEP-EL-9F-3000 |  | Power Cable Puling | 14d | 2015-11-12 | 2015-11-25 | BL3-MEP-EL-8F-3000, BL3-MEP-EL-9F-2020, BL3-MEP-EL-9F-2000, BL3-MEP-EL-9F-2010, BL3-MEP-EL-9F-2070 | 48d | 0d | Cash Flow [6361.76 h]; Electrician [168 h]; Excavation [14] | 6,361.76 | MEP | EL | 2nd Fix | 2f |
|  | 3 | **Final Fix** |  | 2015-11-26 | 2015-12-19 |  |  |  |  |  |  |  |  |  |
| BL3-MEP-EL-9F-3010 |  | SMDB's Termination and Final Connection | 6d | 2015-11-26 | 2015-12-01 | BL3-MEP-EL-9F-3000, BL3-MEP-EL-8F-3010, BL3-MEP-EL-9F-2060, BL3-FN-9F-1070 | 63d | 21d | Cash Flow [2785.83 h]; Electrician [192 h]; Excavation [6] | 2,785.82 | MEP | EL | Final F | ff |
| BL3-MEP-EL-9F-3020 |  | Lights Fitting Fixing | 14d | 2015-11-26 | 2015-12-09 | BL3-MEP-EL-9F-2000, BL3-FN-9F-1070, BL3-MEP-EL-8F-3020 | 40d | 13d | Cash Flow [7322.66 h]; Electrician [244 h]; Excavation [14] | 7,322.66 | MEP | EL | Final F | ff |
| BL3-MEP-EL-9F-3030 |  | Emergency Light Fixing | 8d | 2015-11-26 | 2015-12-03 | BL3-MEP-EL-9F-2030, BL3-FN-9F-1070, BL3-MEP-EL-8F-3030 | 63d | 19d | Cash Flow [5714.02 h]; Electrician [128 h]; Excavation [8] | 5,714.02 | MEP | EL | Final F | ff |
| BL3-MEP-EL-9F-3040 |  | Fire Alarm System Detector Installation | 12d | 2015-11-26 | 2015-12-07 | BL3-MEP-EL-9F-2040, BL3-FN-9F-1070, BL3-MEP-EL-8F-3040 | 46d | 15d | Cash Flow [4034.38 h]; Electrician [192 h]; Excavation [12] | 4,034.38 | MEP | EL | Final F | ff |
| BL3-MEP-EL-9F-3050 |  | Despature for Low Current System Installation | 14d | 2015-11-26 | 2015-12-09 | BL3-MEP-EL-9F-2050, BL3-FN-9F-1070, BL3-FN-9F-1020 | 53d | 0d | Cash Flow [72738.2 h]; Electrician [336 h]; Excavation [14] | 72,738.16 | MEP | EL |  | ff |
| BL3-MEP-EL-9F-3070 |  | Sockets and Switches Fixing | 8d | 2015-11-26 | 2015-12-03 | BL3-MEP-EL-9F-2010, BL3-FN-9F-1070, BL3-MEP-EL-8F-3070 | 58d | 19d | Cash Flow [1166.96 h]; Electrician [128 h]; Excavation [8] | 1,166.96 | MEP | EL | Final F | ff |
| BL3-MEP-EL-9F-3060 |  | Low Current System Outlet installation and Connection | 10d | 2015-12-10 | 2015-12-19 | BL3-MEP-EL-9F-3050, BL3-MEP-EL-9F-2050 | 53d | 47d | Cash Flow [3860.79 h]; Electrician [80 h]; Excavation [10] | 3,860.79 | MEP | EL |  | ff |

| ID | WBS | Activity | Duration | Start | Finish | Predecessors | Total float | Free float | Resources | Cost | Structural | Responsibility | MEP Systems | MEP Steps | Finishing | Fix |
| --- | --- | --- | --- | --- | --- | --- | --- | --- | --- | --- | --- | --- | --- | --- | --- | --- |
|  | 13 | **10th Floor** |  | 2015-07-31 | 2016-02-03 |  |  |  |  |  |  |  |  |  |  |  |
|  | 1 | **Structural** |  | 2015-07-31 | 2015-08-21 |  |  |  |  |  |  |  |  |  |  |  |
| BL3-ST-10F-1000 |  | Reinforcement for Verticals | 5d | 2015-07-31 | 2015-08-04 | ENG-STR-BL3-APP430, ENG-STR-BL3-APP440, BL3-ST-9F-1070 | 0d |  | MNHRS [842.2 h]; Cash Flow [56308.2 h]; Reinforcement [44689.1]; Excavation [5] | 56,308.21 | STR |  |  |  |  |  |
| BL3-ST-10F-1010 |  | MEP Works in Vertical Element | 5d | 2015-07-31 | 2015-08-04 | ENGMEP8660, BL3-ST-10F-1000 FF | 5d |  | Cash Flow [1798.55 h]; Electrician [160 h]; Excavation [5] | 1,798.55 |  | MEP | EL | B.W |  |  |
| BL3-ST-10F-1020 |  | FW for Verticals | 5d | 2015-08-05 | 2015-08-09 | BL3-ST-10F-1000 | 0d |  | MNHRS [9250.41 h]; Cash Flow [40668.8 h]; FW [1306]; Excavation [5] | 40,668.84 | STR |  |  |  |  |  |
| BL3-ST-10F-1030 |  | Concrete Verticals | 1d | 2015-08-10 | 2015-08-10 | BL3-ST-10F-1020, BL3-ST-10F-1010 | 0d |  | MNHRS [2003.27 h]; Cash Flow [33907.1 h]; Concrete [246]; Excavation [1] | 33,907.07 | STR |  |  |  |  |  |
| BL3-ST-10F-1040 |  | FW for Slab | 5d | 2015-08-11 | 2015-08-15 | BL3-ST-10F-1030 | 0d |  | MNHRS [16202.4 h]; Cash Flow [71232.8 h]; FW [2287.5]; Excavation [5] | 71,232.75 | STR |  |  |  |  |  |
| BL3-ST-10F-1050 |  | Reinforcement for Slab | 5d | 2015-08-16 | 2015-08-20 | BL3-ST-10F-1040 | 0d |  | MNHRS [1629.17 h]; Cash Flow [108924 h]; Reinforcement [86447.4]; Excavation [5] | 108,923.67 | STR |  |  |  |  |  |
| BL3-ST-10F-1060 |  | MEP Works in Slab & Beams | 5d | 2015-08-16 | 2015-08-20 | ENGMEP8660, BL3-ST-10F-1050 FF | 0d |  | Cash Flow [3349.02 h]; Electrician [320 h]; Excavation [5] | 3,349.02 |  | MEP | EL | B.W |  |  |
| BL3-ST-10F-1070 |  | Concrete for Slab | 1d | 2015-08-21 | 2015-08-21 | BL3-ST-10F-1050, BL3-ST-10F-1060, BL2-ST-B2-1060 | 0d |  | MNHRS [4319.68 h]; Cash Flow [73114.5 h]; Concrete [529.7]; Excavation [1] | 73,114.49 | STR |  |  |  |  |  |
|  | 2 | **Fiishing** |  | 2015-09-27 | 2016-02-03 |  |  |  |  |  |  |  |  |  |  |  |
| BL3-FN-10F-1000 |  | Block Works | 18d | 2015-09-27 | 2015-10-14 | BL3-ST-11F-1070 FS+14d | 0d |  | Cash Flow [23219 h]; MNHRS [1746.48 h]; BW [456]; Excavation [18] | 23,219.03 |  |  |  |  | FIN |  |
| BL3-FN-10F-1010 |  | Plaster | 14d | 2015-10-15 | 2015-10-28 | BL3-FN-10F-1000, BL3-MEP-EL-10F-1010 FF+3d, BL3-MEP-EL-10F-1000 FF+3d | 0d |  | MNHRS [2773.5 h]; Cash Flow [32597.3 h]; Plaster [924.5]; Excavation [14] | 32,597.31 |  |  |  |  | FIN |  |
| BL3-FN-10F-1020 |  | Paint 1st Coat | 12d | 2015-10-29 | 2015-11-09 | BL3-FN-10F-1010 | 0d |  | MNHRS [832 h]; Cash Flow [5017.38 h]; Painting [924]; Excavation [12] | 5,017.38 |  |  |  |  | FIN |  |
| BL3-FN-10F-1030 |  | Ceiling Paint | 11d | 2015-11-10 | 2015-11-20 | BL3-FN-10F-1020 | 0d |  | MNHRS [40 h]; Cash Flow [239.35 h]; Painting [44]; Excavation [11] | 239.35 |  |  |  |  | FIN |  |
| BL3-FN-10F-1040 |  | Waterproofing | 10d | 2015-11-21 | 2015-11-30 | BL3-FN-10F-1030 | 21d | 0d | MNHRS [14 h]; Cash Flow [262 h]; Waterproofing [44]; Excavation [10] | 262 |  |  |  |  | FIN |  |
| BL3-FN-10F-1050 |  | Wall Tiling | 14d | 2015-11-21 | 2015-12-04 | BL3-FN-10F-1030 | 0d |  | MNHRS [1810 h]; Cash Flow [8144 h]; Tiling [181]; Excavation [14] | 8,144 |  |  |  |  | FIN |  |
| BL3-FN-10F-1060 |  | Flooring Works | 20d | 2015-12-01 | 2015-12-20 | BL3-FN-10F-1040 | 21d | 0d | MNHRS [1379.7 h]; Cash Flow [32152.3 h]; Tiling [210]; Excavation [20] | 32,152.32 |  |  |  |  | FIN |  |
| BL3-FN-10F-1070 |  | False Ceiling | 18d | 2015-12-05 | 2015-12-22 | BL3-FN-10F-1050, BL3-MEP-AC-10F-2070 FF+6d, BL3-MEP-PL-10F-2020 FF+6d, BL3-MEP-PL-10F-2040 FF+6d, BL3-MEP-AC-10F-2030 FF+6d, BL3-MEP-EL-10F-2030 FF+6d, BL3-MEP-EL-10F-2000 FF+6d, BL3-MEP-EL-10F-2010 FF+6d, BL3-MEP-EL-10F-2040 FF+6d, BL3-MEP-EL-10F-2020 FF+6d, BL3-MEP-EL-10F-2070 FF+6d | 0d |  | Cash Flow [63030 h]; False Ceiling [1464]; MNHRS [7320 h]; Excavation [18] | 63,030 |  |  |  |  | FIN |  |
| BL3-FN-10F-1080 |  | Hand Rails for Stairs | 15d | 2015-12-23 | 2016-01-06 | BL3-FN-10F-1070 | 0d |  | Cash Flow [9483.79 h]; Metal Works & Handrail [20]; MNHRS [43 h]; Excavation [15] | 9,483.79 |  |  |  |  | FIN |  |
| BL3-FN-10F-1090 |  | Doors Installation | 15d | 2016-01-07 | 2016-01-21 | BL3-FN-10F-1080, BL3-FN-9F-1090 | 0d |  | Cash Flow [21991.1 h]; Excavation [15] | 21,991.11 |  |  |  |  | FIN |  |
| BL3-FN-10F-1100 |  | Final Paint | 10d | 2016-01-25 | 2016-02-03 | BL3-FN-10F-1060, BL3-MEP-AC-10F-3000 FF+4d, BL3-MEP-EL-10F-3060 FF+4d, BL3-MEP-EL-10F-3040 FF+4d, BL3-MEP-EL-10F-3020 FF+4d, BL3-MEP-EL-10F-3030 FF+4d, BL3-MEP-EL-10F-3070 FF+4d, BL3-MEP-FF-10F-3010 FF+4d, BL3-MEP-PL-10F-3000 FF+4d, BL3-MEP-PL-10F-3010 FF+4d, BL3-MEP-FF-10F-3010, BL3-MEP-EL-10F-3010 FF+4d, BL3-MEP-EL-10F-3050 FF+4d | 13d | 7d | Excavation [10] |  |  |  |  |  | FIN |  |
|  | 15 | **MEP Work** |  | 2015-10-04 | 2016-02-03 |  |  |  |  |  |  |  |  |  |  |  |
|  | 1 | **Mechanical System** |  | 2015-10-06 | 2016-02-03 |  |  |  |  |  |  |  |  |  |  |  |
|  | 2 | **HVAC Works** |  | 2015-10-06 | 2016-01-03 |  |  |  |  |  |  |  |  |  |  |  |
|  | 1 | **1st Fix** |  | 2015-10-06 | 2015-10-17 |  |  |  |  |  |  |  |  |  |  |  |
| BL3-MEP-AC-10F-1000 |  | Supports and Hungers Fixing | 12d | 2015-10-06 | 2015-10-17 | BL3-MEP-AC-9F-1000, BL3-FN-10F-1000 SS+3d, BL3-FN-10F-1000 FF+3d | 24d | 7d | Cash Flow [326.47 h]; Ductman [192 h]; Excavation [12] | 326.47 |  | MEP | AC | 1st Fix |  | 1f |

| ID | WBS | Activity | Duration | Start | Finish | Predecessors | Total float | Free float | Resources | Cost | Responsibility | MEP Systems | MEP Steps | Fix |
| --- | --- | --- | --- | --- | --- | --- | --- | --- | --- | --- | --- | --- | --- | --- |
|  | 3 | **2nd Fix** |  | 2015-10-25 | 2015-12-02 |  |  |  |  |  |  |  |  |  |
| BL3-MEP-AC-10F-2000 |  | FCU's Installation | 8d | 2015-10-25 | 2015-11-01 | BL3-MEP-AC-9F-2000, BL3-MEP-AC-10F-1000, BL3-FN-10F-1010 FF+4d | 36d | 19d | Cash Flow [5992.06 h]; Pipe Fitter - CHW [192 h]; Excavation [8] | 5,992.06 | MEP | AC | 2nd Fix | 2f |
| BL3-MEP-AC-10F-2010 |  | Duct Installation and Insulation | 21d | 2015-10-25 | 2015-11-14 | BL3-MEP-AC-9F-2010, BL3-MEP-AC-10F-1000, BL3-FN-10F-1010 FF+4d | 18d | 0d | Cash Flow [4329.94 h]; Ductman [263 h]; Excavation [21] | 4,329.94 | MEP | AC | 2nd Fix | 2f |
| BL3-MEP-AC-10F-2020 |  | Chilled Water Pipes and Fittings Installation | 21d | 2015-10-25 | 2015-11-14 | BL3-MEP-AC-9F-2020, BL3-MEP-AC-10F-1000, BL3-FN-10F-1010 FF+4d | 17d | 0d | Cash Flow [5230.19 h]; Pipe Fitter - CHW [840 h]; Excavation [21] | 5,230.19 | MEP | AC | 2nd Fix | 2f |
| BL3-MEP-AC-10F-2030 |  | Duct Accessories Installation | 14d | 2015-11-15 | 2015-11-28 | BL3-MEP-AC-10F-2010, BL3-MEP-AC-9F-2030 | 18d |  | Cash Flow [652.97 h]; Pipe Fitter - CHW [448 h]; Excavation [14] | 652.97 | MEP | AC | 2nd Fix | 2f |
| BL3-MEP-AC-10F-2040 |  | Chilled Water Pipes Pressure Test | 6d | 2015-11-15 | 2015-11-20 | BL3-MEP-AC-10F-2020 | 17d | 0d | Cash Flow [581.12 h]; Pipe Fitter - CHW [96 h]; Excavation [6] | 581.12 | MEP | AC | 2nd Fix | 2f |
| BL3-MEP-AC-10F-2050 |  | Chilled Water Pipes Insulation | 12d | 2015-11-21 | 2015-12-02 | BL3-MEP-AC-10F-2040, BL3-MEP-AC-9F-2050 | 72d | 57d | Cash Flow [1658.21 h]; Pipe Fitter - CHW [384 h]; Excavation [12] | 1,658.21 | MEP | AC | 2nd Fix | 2f |
| BL3-MEP-AC-10F-2060 |  | Valve Package Installation | 6d | 2015-11-21 | 2015-11-26 | BL3-MEP-AC-10F-2000, BL3-MEP-AC-10F-2040 | 17d | 0d | Cash Flow [2380.49 h]; Pipe Fitter - CHW [96 h]; Excavation [6] | 2,380.49 | MEP | AC | 2nd Fix | 2f |
| BL3-MEP-AC-10F-2070 |  | FCU's Drain Pipes Installation | 3d | 2015-11-27 | 2015-11-29 | BL3-MEP-AC-10F-2000, BL3-MEP-AC-10F-2060, BL3-MEP-AC-9F-2070 | 17d |  | Cash Flow [516.93 h]; Pipe Fitter - CHW [48 h]; Excavation [3] | 516.93 | MEP | AC | 2nd Fix | 2f |
|  | 4 | **Final Fix** |  | 2015-12-23 | 2016-01-03 |  |  |  |  |  |  |  |  |  |
| BL3-MEP-AC-10F-3000 |  | Grills and Diffusers Fixing | 12d | 2015-12-23 | 2016-01-03 | BL3-MEP-AC-9F-3000, BL3-MEP-AC-10F-2030, BL3-MEP-AC-10F-2010, BL3-FN-10F-1070 | 40d | 27d | Cash Flow [11538.6 h]; Ductman [384 h]; Excavation [12] | 11,538.61 | MEP | AC | Final F | ff |
|  | 1 | **Plumbing and Drainage Works** |  | 2015-10-06 | 2016-01-30 |  |  |  |  |  |  |  |  |  |
|  | 1 | **1st Fix** |  | 2015-10-06 | 2015-10-17 |  |  |  |  |  |  |  |  |  |
| BL3-MEP-PL-10F-1000 |  | Low Level Water Supply Pipes Installation | 12d | 2015-10-06 | 2015-10-17 | BL3-MEP-PL-9F-1000, BL3-FN-10F-1000 SS+3d, BL3-FN-10F-1000 FF+3d | 33d | 7d | Cash Flow [713.22 h]; Plumber [42 h]; Excavation [12] | 713.22 | MEP | PL & D | 1st Fix | 1f |
| BL3-MEP-PL-10F-1010 |  | Low Level Drainage Pipes Installation | 12d | 2015-10-06 | 2015-10-17 | BL3-MEP-PL-9F-1010, BL3-FN-10F-1000 SS+3d, BL3-FN-10F-1000 FF+3d | 33d | 7d | Cash Flow [2279.46 h]; Plumber [12.67 h]; Excavation [12] | 2,279.46 | MEP | PL & D | 1st Fix | 1f |
| BL3-MEP-PL-10F-1020 |  | Supports installation for High level Pipes | 12d | 2015-10-06 | 2015-10-17 | BL3-MEP-PL-9F-1020, BL3-FN-10F-1000 SS+3d, BL3-FN-10F-1000 FF+3d | 33d | 7d | Cash Flow [819.68 h]; Plumber [16.35 h]; Excavation [12] | 819.68 | MEP | PL & D | 1st Fix | 1f |
|  | 3 | **2nd Fix** |  | 2015-10-25 | 2015-12-26 |  |  |  |  |  |  |  |  |  |
| BL3-MEP-PL-10F-2000 |  | High Level Water Supply Pipes and Fittings Installation | 21d | 2015-10-25 | 2015-11-14 | BL3-MEP-PL-9F-2000, BL3-MEP-PL-10F-1020, BL3-MEP-PL-10F-1000, BL3-FN-10F-1010 FF+4d | 26d | 0d | Cash Flow [1308.6 h]; Plumber [150.02 h]; Excavation [21] | 1,308.6 | MEP | PL & D | 2nd Fix | 2f |
| BL3-MEP-PL-10F-2010 |  | High Level Drainage Pipes Installation | 21d | 2015-10-25 | 2015-11-14 | BL3-MEP-PL-9F-2010, BL3-MEP-PL-10F-1020, BL3-MEP-PL-10F-1010, BL3-FN-10F-1010 FF+4d | 26d | 0d | Cash Flow [6562.53 h]; Plumber [244.38 h]; Excavation [21] | 6,562.53 | MEP | PL & D | 2nd Fix | 2f |
| BL3-MEP-PL-10F-2020 |  | Water Supply Pipes Pressure Test | 6d | 2015-11-15 | 2015-11-20 | BL3-MEP-PL-10F-2000, BL3-MEP-PL-9F-2020, BL3-MEP-PL-10F-1000 | 26d |  | Cash Flow [145.74 h]; Plumber [48 h]; Excavation [6] | 145.74 | MEP | PL & D | 2nd Fix | 2f |
| BL3-MEP-PL-10F-2040 |  | Drainage Pipes Gravity Test | 6d | 2015-11-15 | 2015-11-20 | BL3-MEP-PL-10F-2010, BL3-MEP-PL-9F-2040, BL3-MEP-PL-10F-1010 | 26d |  | Cash Flow [820.24 h]; Plumber [48 h]; Excavation [6] | 820.24 | MEP | PL & D | 2nd Fix | 2f |
| BL3-MEP-PL-10F-2030 |  | Floor Drain Installation | 6d | 2015-12-21 | 2015-12-26 | BL3-MEP-PL-9F-2030, BL3-FN-10F-1060 | 40d | 29d | Cash Flow [548.14 h]; Plumber [6 h]; Excavation [6] | 548.14 | MEP | PL & D | 1st Fix | 2f |
|  | 4 | **Final Fix** |  | 2016-01-11 | 2016-01-30 |  |  |  |  |  |  |  |  |  |
| BL3-MEP-PL-10F-3000 |  | Sanitary Ware Installation Including Connection | 14d | 2016-01-11 | 2016-01-24 | BL3-MEP-PL-9F-3000, BL3-MEP-PL-10F-2020, BL3-MEP-PL-10F-2040, BL3-FN-10F-1060, BL3-FN-10F-1050, BL3-FN-10F-1070, BL3-FN-10F-1090 SS+3d, BL3-FN-10F-1090 FF+3d | 0d |  | Cash Flow [4439.52 h]; Plumber [383.86 h]; Excavation [14] | 4,439.52 | MEP | PL & D | Final F | ff |
| BL3-MEP-PL-10F-3010 |  | Sanitary Ware Accessories Installation | 6d | 2016-01-25 | 2016-01-30 | BL3-MEP-PL-10F-3000, BL3-MEP-PL-9F-3010 | 0d |  | Cash Flow [160.22 h]; Plumber [36.45 h]; Excavation [6] | 160.22 | MEP | PL & D | Final F | ff |

| ID | WBS | Activity | Duration | Start | Finish | Predecessors | Total float | Free float | Resources | Cost | Responsibility | MEP Systems | MEP Steps | Fix |
| --- | --- | --- | --- | --- | --- | --- | --- | --- | --- | --- | --- | --- | --- | --- |
|  | 3 | **Fire Fighting Works** |  | 2015-12-23 | 2016-02-03 |  |  |  |  |  |  |  |  |  |
|  | 4 | **Final Fix** |  | 2015-12-23 | 2016-02-03 |  |  |  |  |  |  |  |  |  |
| BL3-MEP-FF-10F-3010 |  | Hose reel Cabinet Installation and Connection | 6d | 2015-12-23 | 2015-12-28 | BL3-FN-10F-1050, BL3-FN-10F-1070 | 40d | 27d | Cash Flow [1330.85 h]; Plumber [192 h]; Excavation [6] | 1,330.85 | MEP | FF | Final F | ff |
| BL3-MEP-FF-10F-3000 |  | Fire Extinguisher Installation | 2d | 2016-02-02 | 2016-02-03 | BL3-MEP-FF-9F-3000, BL3-FN-10F-1050, BL3-FN-10F-1100 SS+1d | 6d | 0d | Cash Flow [1074.99 h]; Plumber [8 h]; Excavation [2] | 1,074.99 | MEP | FF | Final F | ff |
|  | 3 | **Electrical System** |  | 2015-10-04 | 2016-01-15 |  |  |  |  |  |  |  |  |  |
|  | 1 | **1st Fix** |  | 2015-10-04 | 2015-10-21 |  |  |  |  |  |  |  |  |  |
| BL3-MEP-EL-10F-1000 |  | PVC Back Boxes and Conduits Fixing in Wall | 18d | 2015-10-04 | 2015-10-21 | BL3-MEP-EL-9F-1000, BL3-FN-10F-1000 SS+3d, BL3-FN-10F-1000 FF+3d | 3d | 0d | Cash Flow [3307.67 h]; Electrician [384 h]; Excavation [18] | 3,307.67 | MEP | EL | 1st Fix | 1f |
| BL3-MEP-EL-10F-1010 |  | DB's Inclosure Fixing | 6d | 2015-10-12 | 2015-10-17 | BL3-MEP-EL-9F-1010, BL3-FN-10F-1000 SS+3d, BL3-FN-10F-1000 FF+3d | 8d |  | Cash Flow [2130.4 h]; Electrician [96 h]; Excavation [6] | 2,130.4 | MEP | EL | 1st Fix | 1f |
|  | 2 | **2nd Fix** |  | 2015-10-20 | 2015-12-09 |  |  |  |  |  |  |  |  |  |
| BL3-MEP-EL-10F-2020 |  | Cable Tray and Trunking Installation | 14d | 2015-10-20 | 2015-11-02 | BL3-MEP-EL-9F-2020, BL3-FN-10F-1010 FF+4d | 44d | 23d | Cash Flow [9064.45 h]; Electrician [336 h]; Excavation [14] | 9,064.45 | MEP | EL | 2nd Fix | 2f |
| BL3-MEP-EL-10F-2000 |  | Lighting Wiring | 12d | 2015-10-22 | 2015-11-02 | BL3-MEP-EL-9F-2000, BL3-MEP-EL-10F-1000, BL3-FN-10F-1010 FF+4d | 44d | 0d | Cash Flow [3566.08 h]; Electrician [241.71 h]; Excavation [12] | 3,566.08 | MEP | EL | 2nd Fix | 2f |
| BL3-MEP-EL-10F-2010 |  | Power Points Wiring | 12d | 2015-10-22 | 2015-11-02 | BL3-MEP-EL-9F-2010, BL3-MEP-EL-10F-1000, BL3-FN-10F-1010 FF+4d | 44d | 0d | Cash Flow [2894.21 h]; Electrician [192 h]; Excavation [12] | 2,894.21 | MEP | EL | 2nd Fix | 2f |
| BL3-MEP-EL-10F-2040 |  | Fire Alarm System Wiring | 12d | 2015-10-22 | 2015-11-02 | BL3-MEP-EL-9F-2040, BL3-MEP-EL-10F-1000, BL3-FN-10F-1010 FF+4d | 44d | 0d | Cash Flow [7111.01 h]; Electrician [192 h]; Excavation [12] | 7,111.01 | MEP | EL | 2nd Fix | 2f |
| BL3-MEP-EL-10F-2050 |  | Low Current System Wiring | 14d | 2015-10-22 | 2015-11-04 | BL3-MEP-EL-10F-1000, BL3-FN-10F-1010 FF+4d | 76d | 48d | Cash Flow [38217.8 h]; Electrician [244 h]; Excavation [14] | 38,217.78 | MEP | EL |  | 2f |
| BL3-MEP-EL-10F-2030 |  | Emergency Light Wiring | 8d | 2015-10-25 | 2015-11-01 | BL3-MEP-EL-9F-2030, BL3-MEP-EL-10F-1000, BL3-FN-10F-1010 FF+4d | 45d |  | Cash Flow [1202.03 h]; Electrician [128 h]; Excavation [8] | 1,202.03 | MEP | EL | 2nd Fix | 2f |
| BL3-MEP-EL-10F-2060 |  | SMDB's Installation | 6d | 2015-11-10 | 2015-11-15 | BL3-MEP-EL-10F-1000, BL3-FN-10F-1020, BL3-MEP-EL-9F-2060 | 79d | 0d | Cash Flow [4196.6 h]; Electrician [45 h]; Excavation [6] | 4,196.6 | MEP | EL | 2nd Fix | 2f |
| BL3-MEP-EL-10F-2070 |  | DB's Installation and Termination | 12d | 2015-11-12 | 2015-11-23 | BL3-MEP-EL-9F-2070, BL3-MEP-EL-10F-1010, BL3-FN-10F-1020 | 23d | 0d | Cash Flow [4970.93 h]; Electrician [288 h]; Excavation [12] | 4,970.93 | MEP | EL | 2nd Fix | 2f |
| BL3-MEP-EL-10F-3000 |  | Power Cable Puling | 14d | 2015-11-26 | 2015-12-09 | BL3-MEP-EL-9F-3000, BL3-MEP-EL-10F-2020, BL3-MEP-EL-10F-2000, BL3-MEP-EL-10F-2010, BL3-MEP-EL-10F-2070 | 48d | 3d | Cash Flow [6361.76 h]; Electrician [168 h]; Excavation [14] | 6,361.76 | MEP | EL | 2nd Fix | 2f |
|  | 3 | **Final Fix** |  | 2015-12-23 | 2016-01-15 |  |  |  |  |  |  |  |  |  |
| BL3-MEP-EL-10F-3010 |  | SMDB's Termination and Final Connection | 6d | 2015-12-23 | 2015-12-28 | BL3-MEP-EL-10F-3000, BL3-MEP-EL-9F-3010, BL3-MEP-EL-10F-2060, BL3-FN-10F-1070 | 42d | 0d | Cash Flow [2785.83 h]; Electrician [192 h]; Excavation [6] | 2,785.82 | MEP | EL | Final F | ff |
| BL3-MEP-EL-10F-3020 |  | Lights Fitting Fixing | 14d | 2015-12-23 | 2016-01-05 | BL3-MEP-EL-10F-2000, BL3-FN-10F-1070, BL3-MEP-EL-9F-3020 | 27d | 0d | Cash Flow [7322.66 h]; Electrician [244 h]; Excavation [14] | 7,322.66 | MEP | EL | Final F | ff |
| BL3-MEP-EL-10F-3030 |  | Emergency Light Fixing | 8d | 2015-12-23 | 2015-12-30 | BL3-MEP-EL-10F-2030, BL3-FN-10F-1070, BL3-MEP-EL-9F-3030 | 44d | 31d | Cash Flow [5714.02 h]; Electrician [128 h]; Excavation [8] | 5,714.02 | MEP | EL | Final F | ff |
| BL3-MEP-EL-10F-3040 |  | Fire Alarm System Detector Installation | 12d | 2015-12-23 | 2016-01-03 | BL3-MEP-EL-10F-2040, BL3-FN-10F-1070, BL3-MEP-EL-9F-3040 | 31d | 0d | Cash Flow [4034.38 h]; Electrician [192 h]; Excavation [12] | 4,034.38 | MEP | EL | Final F | ff |
| BL3-MEP-EL-10F-3050 |  | Despature for Low Current System Installation | 14d | 2015-12-23 | 2016-01-05 | BL3-MEP-EL-10F-2050, BL3-FN-10F-1020, BL3-FN-10F-1070 | 28d | 0d | Cash Flow [72738.2 h]; Electrician [336 h]; Excavation [14] | 72,738.16 | MEP | EL |  | ff |
| BL3-MEP-EL-10F-3070 |  | Sockets and Switches Fixing | 8d | 2015-12-23 | 2015-12-30 | BL3-MEP-EL-10F-2010, BL3-FN-10F-1070, BL3-MEP-EL-9F-3070 | 39d | 0d | Cash Flow [1166.96 h]; Electrician [128 h]; Excavation [8] | 1,166.96 | MEP | EL | Final F | ff |
| BL3-MEP-EL-10F-3060 |  | Low Current System Outlet installation and Connection | 10d | 2016-01-06 | 2016-01-15 | BL3-MEP-EL-10F-3050, BL3-MEP-EL-10F-2050 | 28d | 15d | Cash Flow [3860.79 h]; Electrician [80 h]; Excavation [10] | 3,860.79 | MEP | EL |  | ff |

| ID | WBS | Activity | Duration | Start | Finish | Predecessors | Total float | Free float | Calendar | Resources | Cost | Structural | Responsibility | MEP Systems | MEP Steps | Finishing |
| --- | --- | --- | --- | --- | --- | --- | --- | --- | --- | --- | --- | --- | --- | --- | --- | --- |
|  | 14 | **Roof** |  | 2015-08-22 | 2016-03-01 |  |  |  |  |  |  |  |  |  |  |  |
|  | 1 | **Structural** |  | 2015-08-22 | 2015-10-01 |  |  |  |  |  |  |  |  |  |  |  |
| BL3-ST-11F-1000 |  | Reinforcement for Verticals | 5d | 2015-08-22 | 2015-08-26 | ENG-STR-BL3-APP450, ENG-STR-BL3-APP460, ENG-STR-BL3-APP470, ENG-STR-BL3-APP480, BL3-ST-10F-1070 | 0d |  |  | MNHRS [842.2 h]; Cash Flow [56308.2 h]; Reinforcement [44689.1]; Excavation [5] | 56,308.21 | STR |  |  |  |  |
| BL3-ST-11F-1010 |  | MEP Works in Vertical Element | 5d | 2015-08-22 | 2015-08-26 | ENGMEP8660, BL3-ST-11F-1000 FF | 5d |  |  | Cash Flow [1798.55 h]; Electrician [160 h]; Excavation [5] | 1,798.55 |  | MEP | EL | B.W |  |
| BL3-ST-11F-1020 |  | FW for Verticals | 5d | 2015-08-27 | 2015-08-31 | BL3-ST-11F-1000 | 0d |  |  | MNHRS [12893.2 h]; Cash Flow [56685.1 h]; FW [1820.3]; Excavation [5] | 56,685.1 | STR |  |  |  |  |
| BL3-ST-11F-1030 |  | Concrete Verticals | 1d | 2015-09-01 | 2015-09-01 | BL3-ST-11F-1020, BL3-ST-11F-1010 | 0d |  |  | MNHRS [2120.83 h]; Cash Flow [35366 h]; Concrete [256]; Excavation [1] | 35,366 | STR |  |  |  |  |
| BL3-ST-11F-1040 |  | FW for Slab | 5d | 2015-09-02 | 2015-09-06 | BL3-ST-11F-1030 | 0d |  |  | MNHRS [14506.6 h]; Cash Flow [63774.7 h]; FW [2048]; Excavation [5] | 63,774.72 | STR |  |  |  |  |
| BL3-ST-11F-1050 |  | Reinforcement for Slab | 5d | 2015-09-07 | 2015-09-11 | BL3-ST-11F-1040 | 0d |  |  | MNHRS [1629.17 h]; Cash Flow [108924 h]; Reinforcement [86447.4]; Excavation [5] | 108,923.67 | STR |  |  |  |  |
| BL3-ST-11F-1060 |  | MEP Works in Slab & Beams | 5d | 2015-09-07 | 2015-09-11 | ENGMEP8660, BL3-ST-11F-1050 FF | 0d |  |  | Cash Flow [3349.02 h]; Electrician [320 h]; Excavation [5] | 3,349.02 |  | MEP | EL | B.W |  |
| BL3-ST-11F-1070 |  | Concrete for Slab | 1d | 2015-09-12 | 2015-09-12 | BL3-ST-11F-1050, BL3-ST-11F-1060 | 0d |  |  | MNHRS [4319.68 h]; Cash Flow [73114.5 h]; Concrete [529.7]; Excavation [1] | 73,114.49 | STR |  |  |  |  |
| BL3-ST-11F-1080 |  | Reinforcement for Staircase Verticals | 5d | 2015-09-13 | 2015-09-17 | BL3-ST-11F-1070 | 0d |  | EMIRAL ALGERIA | Excavation [5] |  |  |  |  |  |  |
| BL3-ST-11F-1090 |  | FW for Parapet | 8d | 2015-09-13 | 2015-09-21 | BL3-ST-11F-1070 | 28d | 0d | EMIRAL ALGERIA | Excavation [8] |  |  |  |  |  |  |
| BL3-ST-11F-1100 |  | Reinforcement for Parapet | 3d | 2015-09-16 | 2015-09-19 | BL3-ST-11F-1090 SS+3d | 30d | 2d | EMIRAL ALGERIA | Excavation [3] |  |  |  |  |  |  |
| BL3-ST-11F-1110 |  | FW for Staircase Verticals | 4d | 2015-09-19 | 2015-09-22 | BL3-ST-11F-1080 | 0d |  | EMIRAL ALGERIA | Excavation [4] |  |  |  |  |  |  |
| BL3-ST-11F-1120 |  | Concrete for Parapet | 1d | 2015-09-22 | 2015-09-22 | BL3-ST-11F-1090, BL3-ST-11F-1100 | 28d |  | EMIRAL ALGERIA | Excavation [1] |  |  |  |  |  |  |
| BL3-ST-11F-1130 |  | Concrete for Staircase Verticals | 1d | 2015-09-23 | 2015-09-23 | BL3-ST-11F-1110 | 0d |  | EMIRAL ALGERIA | Excavation [1] |  |  |  |  |  |  |
| BL3-ST-11F-1140 |  | FW for Staircase Slab | 3d | 2015-09-24 | 2015-09-27 | BL3-ST-11F-1130 | 0d |  | EMIRAL ALGERIA | Excavation [3] |  |  |  |  |  |  |
| BL3-ST-11F-1150 |  | Reinforcement for Staircase Slab | 3d | 2015-09-28 | 2015-09-30 | BL3-ST-11F-1140 | 0d |  | EMIRAL ALGERIA | Excavation [3] |  |  |  |  |  |  |
| BL3-ST-11F-1160 |  | Concrete for Staircase Slab | 1d | 2015-10-01 | 2015-10-01 | BL3-ST-11F-1150 | 0d |  | EMIRAL ALGERIA | Excavation [1] |  |  |  |  |  |  |
|  | 2 | **Fiishing** |  | 2015-10-16 | 2016-02-05 |  |  |  |  |  |  |  |  |  |  |  |
| BL3-FN-11F-1000 |  | Block Works | 10d | 2015-10-16 | 2015-10-25 | BL3-FN-10F-1000, BL3-ST-11F-1160 FS+14d | 0d |  |  | Cash Flow [23219 h]; MNHRS [1746.48 h]; BW [456]; Excavation [10] | 23,219.03 |  |  |  |  | FIN |
| BL3-FN-11F-1010 |  | Plaster | 14d | 2015-10-26 | 2015-11-08 | BL3-FN-11F-1000, BL3-MEP-EL-11F-1000 FF+3d, BL3-ST-11F-1120 | 0d |  |  | MNHRS [2773.5 h]; Cash Flow [32597.3 h]; Plaster [924.5]; Excavation [14] | 32,597.31 |  |  |  |  | FIN |
| BL3-FN-11F-1020 |  | Paint 1st Coat | 7d | 2015-11-09 | 2015-11-15 | BL3-FN-11F-1010 | 0d |  |  | MNHRS [872 h]; Cash Flow [5256 h]; Painting [968]; Excavation [7] | 5,256 |  |  |  |  | FIN |
| BL3-FN-11F-1040 |  | Flooring Works | 23d | 2015-11-16 | 2015-12-08 | BL3-FN-11F-1020 | 0d |  |  | MNHRS [1379.7 h]; Cash Flow [32152.3 h]; Tiling [210]; Excavation [23] | 32,152.32 |  |  |  |  | FIN |
| BL3-FN-11F-1050 |  | Hand Rails for Stairs | 15d | 2015-12-09 | 2015-12-23 | BL3-FN-11F-1040 | 61d | 29d |  | Cash Flow [9483.79 h]; Metal Works & Handrail [20]; MNHRS [43 h]; Excavation [15] | 9,483.79 |  |  |  |  | FIN |
| BL3-FN-11F-1060 |  | Final Paint | 10d | 2016-01-13 | 2016-01-22 | BL3-FN-11F-1040, BL3-MEP-EL-11F-3000 FF+3d, BL3-MEP-EL-11F-3010 FF+3d, BL3-MEP-EL-11F-3050 FF+3d, BL3-MEP-EL-11F-3020 FF+3d, BL3-MEP-EL-11F-3040 FF+3d | 27d | 21d |  | Excavation [10] |  |  |  |  |  | FIN |
| BL3-FN-11F-1070 |  | Doors Installation | 15d | 2016-01-22 | 2016-02-05 | BL3-FN-11F-1050, BL3-FN-10F-1090 | 32d |  |  | Cash Flow [21991.1 h]; Excavation [15] | 21,991.11 |  |  |  |  | FIN |

| ID | WBS | Activity | Type | Duration | Start | Finish | Predecessors | Total float | Free float | Resources | Cost | Responsibility | MEP Systems | MEP Steps | Fix |
| --- | --- | --- | --- | --- | --- | --- | --- | --- | --- | --- | --- | --- | --- | --- | --- |
|  | 11 | **MEP Work** |  |  | 2015-10-22 | 2016-03-01 |  |  |  |  |  |  |  |  |  |
|  | 1 | **Mechanical System** |  |  | 2015-12-09 | 2016-02-28 |  |  |  |  |  |  |  |  |  |
|  | 2 | **HVAC Works** |  |  | 2015-12-09 | 2016-02-28 |  |  |  |  |  |  |  |  |  |
|  | 1 | **1st Fix** |  |  | 2015-12-09 | 2015-12-21 |  |  |  |  |  |  |  |  |  |
| BL3-MEP-AC-11F-1000 |  | Foundation for MEP Equipments ready | milestone | 0d | 2015-12-09 | 2015-12-09 | BL3-FN-11F-1040 FF+1d | 0d |  |  |  | MEP | AC | 1st Fix |  |
| BL3-MEP-AC-11F-1010 |  | Supports and Hungers Fixing |  | 12d | 2015-12-10 | 2015-12-21 | OFF-ENG-MEP-AC1210, OFF-PRO-MEP-AC1520, BL3-MEP-AC-11F-1000, BL3-MEP-AC-10F-1000 | 0d |  | Cash Flow [979.38 h]; Ductman [192 h]; Excavation [12] | 979.38 | MEP | AC | 1st Fix | 1f |
|  | 3 | **2nd Fix** |  |  | 2015-12-22 | 2016-02-28 |  |  |  |  |  |  |  |  |  |
| BL3-MEP-AC-11F-2000 |  | Heat Pumps Installation |  | 21d | 2015-12-22 | 2016-01-11 | OFF-PRO-MEP-AC1220, BL3-MEP-AC-11F-1000, BL3-MEP-AC-11F-1010 | 4d |  | Cash Flow [418117 h]; Pipe Fitter - CHW [252 h]; Excavation [21] | 418,116.94 | MEP | AC | 2nd Fix | 2f |
| BL3-MEP-AC-11F-2020 |  | AHU's Installation |  | 21d | 2015-12-22 | 2016-01-11 | OFF-PRO-MEP-AC1270, BL3-MEP-AC-11F-1000, BL3-MEP-AC-11F-1010 | 0d |  | Cash Flow [223059 h]; Pipe Fitter - CHW [252 h]; Excavation [21] | 223,059.22 | MEP | AC | 2nd Fix | 2f |
| BL3-MEP-AC-11F-2030 |  | Pressurization Units Installation |  | 21d | 2015-12-22 | 2016-01-11 | BL3-MEP-AC-11F-1000, BL3-MEP-AC-11F-1010 | 2d | 0d | Cash Flow [14019 h]; Pipe Fitter - CHW [252 h]; Excavation [21] | 14,018.95 | MEP | AC | 2nd Fix | 2f |
| BL3-MEP-AC-11F-2040 |  | Chemical Treatment Unit Installation |  | 14d | 2015-12-22 | 2016-01-04 | OFF-PRO-MEP-AC1420, BL3-MEP-AC-11F-1000, BL3-MEP-AC-11F-1010 | 36d |  | Cash Flow [65818 h]; Pipe Fitter - CHW [168 h]; Excavation [14] | 65,817.99 | MEP | AC | 2nd Fix | 2f |
| BL3-MEP-AC-11F-2010 |  | Chilled Water Pipes and Fittings Installation and Final Connection |  | 30d | 2015-12-24 | 2016-01-22 | BL3-MEP-AC-11F-2000 FF+7d, BL3-MEP-AC-10F-2020, BL3-MEP-AC-11F-1010, BL3-MEP-AC-11F-2020 SS+2d, BL3-MEP-AC-11F-2020 FF+2d | 0d |  | Cash Flow [14864.8 h]; Pipe Fitter - CHW [480 h]; Excavation [30] | 14,864.75 | MEP | AC | 2nd Fix | 2f |
| BL3-MEP-AC-11F-2050 |  | Duct Installation and Insulation |  | 30d | 2016-01-12 | 2016-02-10 | BL3-MEP-AC-11F-2020, BL3-MEP-AC-11F-2030, BL3-MEP-AC-10F-2010, BL3-MEP-AC-11F-1010 | 2d | 0d | Cash Flow [5549.65 h]; Ductman [960 h]; Excavation [30] | 5,549.65 | MEP | AC | 2nd Fix | 2f |
| BL3-MEP-AC-11F-2060 |  | BTU Meter Installation |  | 6d | 2016-01-12 | 2016-01-17 | BL3-MEP-AC-11F-2020 | 23d |  | Cash Flow [26512.5 h]; Pipe Fitter - CHW [48 h]; Excavation [6] | 26,512.54 | MEP | AC | 2nd Fix | 2f |
| BL3-MEP-AC-11F-2070 |  | Chilled Water Pipes Pressure Test |  | 6d | 2016-01-23 | 2016-01-28 | BL3-MEP-AC-11F-2010 | 0d |  | Cash Flow [1651.63 h]; Pipe Fitter - CHW [48 h]; Excavation [6] | 1,651.63 | MEP | AC | 2nd Fix | 2f |
| BL3-MEP-AC-11F-2080 |  | Chilled Water Pipes Insulation |  | 18d | 2016-01-29 | 2016-02-15 | BL3-MEP-AC-11F-2070, BL3-MEP-AC-10F-2050 | 15d | 13d | Cash Flow [4717.51 h]; Pipe Fitter - CHW [288 h]; Excavation [18] | 4,717.51 | MEP | AC | 2nd Fix | 2f |
| BL3-MEP-AC-11F-2090 |  | Chilled Water Pumps Installation and Final Connection |  | 21d | 2016-01-29 | 2016-02-18 | BL3-MEP-AC-11F-2070, OFF-PRO-MEP-AC1370, BL3-MEP-AC-11F-1000 | 0d |  | Cash Flow [198980 h]; Pipe Fitter - CHW [252 h]; Excavation [21] | 198,979.64 | MEP | AC | 2nd Fix | 2f |
| BL3-MEP-AC-11F-2100 |  | Extract and Fresh Fan's Installation |  | 25d | 2016-02-04 | 2016-02-28 | BL3-MEP-AC-11F-2050 FS-7d, OFF-PRO-MEP-AC1470, BL3-MEP-AC-11F-1000 | 2d | 0d | Cash Flow [192946 h]; Pipe Fitter - CHW [800 h]; Excavation [25] | 192,945.87 | MEP | AC | 2nd Fix | 2f |
|  | 1 | **Plumbing and Drainage Works** |  |  | 2015-12-09 | 2016-01-01 |  |  |  |  |  |  |  |  |  |
|  | 4 | **Final Fix** |  |  | 2015-12-09 | 2016-01-01 |  |  |  |  |  |  |  |  |  |
| BL3-MEP-PL-11F-3000 |  | Pip Tap Fixing |  | 4d | 2015-12-09 | 2015-12-12 | BL2-MEP-PL-9F-3020, OFF-ENG-MEP-WS1140, BL3-FN-11F-1040 | 34d | 0d | Cash Flow [124.04 h]; Plumber [8 h]; Excavation [4] | 124.04 | MEP | PL & D | Final F | ff |
| BL3-MEP-PL-11F-3010 |  | Vent Pipes Installation |  | 14d | 2015-12-13 | 2015-12-26 | BL3-MEP-PL-11F-3000, BL3-FN-11F-1010 FF+3d | 34d | 0d | Cash Flow [971.63 h]; Plumber [383.86 h]; Excavation [14] | 971.63 | MEP | PL & D | Final F | ff |
| BL3-MEP-PL-11F-3020 |  | Rain Outlet Installation |  | 6d | 2015-12-27 | 2016-01-01 | BL3-MEP-PL-11F-3010, BL3-FN-11F-1040, BL3-FN-11F-1010 FF+3d | 34d | 23d | Cash Flow [444.47 h]; Plumber [36.45 h]; Excavation [6] | 444.47 | MEP | PL & D | Final F | ff |
|  | 3 | **Fire Fighting Works** |  |  | 2016-02-04 | 2016-02-05 |  |  |  |  |  |  |  |  |  |
|  | 4 | **Final Fix** |  |  | 2016-02-04 | 2016-02-05 |  |  |  |  |  |  |  |  |  |
| BL3-MEP-FF-11F-3000 |  | Fire Extinguisher Installation |  | 2d | 2016-02-04 | 2016-02-05 | BL3-MEP-FF-10F-3000, BL3-FN-11F-1040 FF+3d, BL3-FN-11F-1060 SS+1d | 6d | 0d | Cash Flow [1074.99 h]; Plumber [8 h]; Excavation [2] | 1,074.99 | MEP | FF | Final F | ff |

| ID | WBS | Activity | Duration | Start | Finish | Predecessors | Total float | Free float | Resources | Cost | Responsibility | MEP Systems | MEP Steps | Fix |
| --- | --- | --- | --- | --- | --- | --- | --- | --- | --- | --- | --- | --- | --- | --- |
|  | 3 | **Electrical System** |  | 2015-10-22 | 2016-03-01 |  |  |  |  |  |  |  |  |  |
|  | 1 | **1st Fix** |  | 2015-10-22 | 2015-11-02 |  |  |  |  |  |  |  |  |  |
| BL3-MEP-EL-11F-1000 |  | PVC Back Boxes and Conduits Fixing in Wall | 12d | 2015-10-22 | 2015-11-02 | BL3-MEP-EL-10F-1000, BL3-FN-11F-1000 FF+3d, BL3-FN-11F-1000 SS+3d | 3d | 0d | Cash Flow [3307.67 h]; Electrician [384 h]; Excavation [12] | 3,307.67 | MEP | EL | 1st Fix | 1f |
|  | 2 | **2nd Fix** |  | 2015-11-03 | 2015-12-12 |  |  |  |  |  |  |  |  |  |
| BL3-MEP-EL-11F-2020 |  | Lighting Wiring | 12d | 2015-11-03 | 2015-11-14 | BL3-MEP-EL-10F-2000, BL3-MEP-EL-11F-1000, BL3-FN-11F-1010 FF+3d | 73d | 24d | Cash Flow [3566.08 h]; Electrician [241.71 h]; Excavation [12] | 3,566.08 | MEP | EL | 2nd Fix | 2f |
| BL3-MEP-EL-11F-2030 |  | Power Points Wiring | 12d | 2015-11-03 | 2015-11-14 | BL3-MEP-EL-10F-2010, BL3-MEP-EL-11F-1000, BL3-FN-11F-1010 FF+3d | 73d | 28d | Cash Flow [2894.21 h]; Electrician [192 h]; Excavation [12] | 2,894.21 | MEP | EL | 2nd Fix | 2f |
| BL3-MEP-EL-11F-2040 |  | Fire Alarm System Wiring | 12d | 2015-11-03 | 2015-11-14 | BL3-MEP-EL-10F-2040, BL3-MEP-EL-11F-1000, BL3-FN-11F-1010 FF+3d | 81d | 50d | Cash Flow [7111.01 h]; Electrician [192 h]; Excavation [12] | 7,111.01 | MEP | EL | 2nd Fix | 2f |
| BL3-MEP-EL-11F-2000 |  | Lighting Protection | 5d | 2015-11-07 | 2015-11-11 | ENGMEP8870, BL3-MEP-EL-11F-1000, BL3-FN-11F-1010 FF+3d | 86d | 27d | Cash Flow [41.35 h]; Electrician [160 h]; Excavation [5] | 41.35 | MEP | EL | 2nd Fix | 2f |
| BL3-MEP-EL-11F-2010 |  | SMDB's Installation | 6d | 2015-11-16 | 2015-11-21 | BL3-MEP-EL-11F-1000, BL3-FN-11F-1020, BL3-FN-11F-1020 FF, BL3-MEP-EL-10F-2060 | 80d | 37d | Cash Flow [4196.6 h]; Electrician [45 h]; Excavation [6] | 4,196.6 | MEP | EL | 2nd Fix | 2f |
| BL3-MEP-EL-11F-2050 |  | Cable Tray and Trunking Installation | 14d | 2015-11-29 | 2015-12-12 | BL3-MEP-EL-10F-2020, BL3-FN-11F-1040 FF+4d | 45d | 0d | Cash Flow [9064.45 h]; Electrician [336 h]; Excavation [14] | 9,064.45 | MEP | EL | 2nd Fix | 2f |
|  | 3 | **Final Fix** |  | 2015-12-09 | 2016-03-01 |  |  |  |  |  |  |  |  |  |
| BL3-MEP-EL-11F-3020 |  | Air Craft Lights Installation | 10d | 2015-12-09 | 2015-12-18 | PROCMEPELE9480, BL3-MEP-EL-11F-1000, BL3-MEP-EL-11F-2020, BL3-MEP-EL-11F-2000, BL3-FN-11F-1040 | 59d | 32d | Cash Flow [82.69 h]; Electrician [160 h]; Excavation [10] | 82.69 | MEP | EL | Final F | ff |
| BL3-MEP-EL-11F-3030 |  | Power Cable Puling | 14d | 2015-12-13 | 2015-12-26 | BL3-MEP-EL-10F-3000, BL3-MEP-EL-11F-2050, BL3-MEP-EL-11F-2020, BL3-MEP-EL-11F-2030 | 45d | 2d | Cash Flow [6361.76 h]; Electrician [168 h]; Excavation [14] | 6,361.76 | MEP | EL | 2nd Fix | 2f |
| BL3-MEP-EL-11F-3040 |  | SMDB's Termination and Final Connection | 6d | 2015-12-29 | 2016-01-03 | BL3-MEP-EL-11F-3030, BL3-MEP-EL-10F-3010, BL3-MEP-EL-11F-2010 | 43d | 16d | Cash Flow [2785.83 h]; Electrician [192 h]; Excavation [6] | 2,785.82 | MEP | EL | Final F | ff |
| BL3-MEP-EL-11F-3050 |  | Sockets and Switches Fixing | 8d | 2015-12-31 | 2016-01-07 | BL3-MEP-EL-11F-2030, BL3-FN-11F-1040, BL3-MEP-EL-10F-3070 | 39d | 12d | Cash Flow [1166.96 h]; Electrician [128 h]; Excavation [8] | 1,166.96 | MEP | EL | Final F | ff |
| BL3-MEP-EL-11F-3010 |  | Fire Alarm System Detector Installation | 12d | 2016-01-04 | 2016-01-15 | BL3-MEP-EL-11F-2040, BL3-FN-11F-1040 FF+5d, BL3-MEP-EL-10F-3040 | 31d | 4d | Cash Flow [4034.38 h]; Electrician [192 h]; Excavation [12] | 4,034.38 | MEP | EL | Final F | ff |
| BL3-MEP-EL-11F-3000 |  | Lights Fitting Fixing | 14d | 2016-01-06 | 2016-01-19 | BL3-MEP-EL-11F-2020, BL3-FN-11F-1040 FF+5d, BL3-MEP-EL-10F-3020 | 27d | 0d | Cash Flow [7322.66 h]; Electrician [244 h]; Excavation [14] | 7,322.66 | MEP | EL | Final F | ff |
| BL3-MEP-EL-11F-3060 |  | Equipments Panels Installation and Termination | 21d | 2016-02-10 | 2016-03-01 | BL3-MEP-AC-11F-2000, BL3-MEP-AC-11F-2020, BL3-MEP-AC-11F-2030, BL3-MEP-AC-11F-2040, BL3-MEP-AC-11F-2060, BL3-MEP-AC-11F-2090 FF+12d, BL3-MEP-EL-11F-1000, BL3-MEP-EL-11F-2030 | 0d |  | Cash Flow [133382 h]; Electrician [1008 h]; Excavation [21] | 133,381.64 | MEP | EL | Final F | ff |
|  | 17 | **MEP Riser** |  | 2015-10-26 | 2015-12-24 |  |  |  |  |  |  |  |  |  |
| BL3-MEP-RZR-100 |  | Drainage Riser and Final Connection | 30d | 2015-10-26 | 2015-11-24 | OFF-ENG-MEP-DR1160, OFF-ENG-MEP-DR1170, BL3-FN-11F-1000 | 64d | 0d | Cash Flow [10202.1 h]; Plumber [960 h]; Excavation [30] | 10,202.1 | MEP | PL & D |  | 2f |
| BL3-MEP-RZR-110 |  | Water Supply Pipes Riser and Final Connection | 30d | 2015-10-26 | 2015-11-24 | OFF-ENG-MEP-WS1150, BL3-FN-11F-1000 | 67d |  | Cash Flow [8827.35 h]; Plumber [960 h]; Excavation [30] | 8,827.35 | MEP | PL & D |  | 2f |
| BL3-MEP-RZR-120 |  | Duct Riser Including Connection | 21d | 2015-10-26 | 2015-11-15 | OFF-ENG-MEP-AC1230, BL3-FN-11F-1000 | 107d | 105d | Cash Flow [35531.6 h]; Ductman [672 h]; Excavation [21] | 35,531.64 | MEP | AC |  | 2f |
| BL3-MEP-RZR-140 |  | Fire Fighting Pipes Riser and Final Connection | 30d | 2015-10-26 | 2015-11-24 | OFF-ENG-MEP-FF1150, OFF-ENG-MEP-FF1160, BL3-FN-11F-1000 | 6d | 0d | Cash Flow [26058.3 h]; Plumber [960 h]; Excavation [30] | 26,058.26 | MEP | FF |  | 2f |
| BL3-MEP-RZR-130 |  | Chilled Water Pipes Riser and Final Connection | 30d | 2015-11-25 | 2015-12-24 | BL3-MEP-RZR-100, OFF-ENG-MEP-AC1220, BL3-FN-11F-1000 | 64d | 57d | Cash Flow [26306.3 h]; Pipe Fitter - CHW [672 h]; Excavation [30] | 26,306.33 | MEP | AC |  | 2f |

| ID | WBS | Activity | Duration | Start | Finish | Predecessors | Total float | Free float | Resources | Cost | Facade | Structural | Responsibility | MEP Systems | MEP Steps |
| --- | --- | --- | --- | --- | --- | --- | --- | --- | --- | --- | --- | --- | --- | --- | --- |
|  | 1 | **Block 2** |  |  |  |  |  |  |  |  |  |  |  |  |  |
|  | 15 | **External Facade** |  | 2015-09-13 | 2016-01-10 |  |  |  |  |  |  |  |  |  |  |
|  | 1 | **North Elevation** |  | 2015-09-13 | 2015-10-12 |  |  |  |  |  |  |  |  |  |  |
| BL3-XE-NRTH-10 |  | Stone Fixation | 30d | 2015-09-13 | 2015-10-12 | BL3-ST-11F-1070 | 81d | 0d | Stone CLadding [1234.5]; MNHRS [8024 h]; Cash Flow [180459 h]; Excavation [30] | 180,459 | FCD |  |  |  |  |
| BL3-XE-NRTH-20 |  | Aluminum Glazing | 30d | 2015-09-13 | 2015-10-12 | BL3-ST-11F-1070 | 81d | 0d | Aluminum Cladding [723.42]; MNHRS [4702.2 h]; Cash Flow [265147 h]; Excavation [30] | 265,146.7 | FCD |  |  |  |  |
|  | 2 | **South Elevation** |  | 2015-10-13 | 2015-11-11 |  |  |  |  |  |  |  |  |  |  |
| BL3-XE-SOTH-10 |  | Stone Fixation | 30d | 2015-10-13 | 2015-11-11 | BL3-XE-NRTH-10, BL3-ST-11F-1070 | 81d | 0d | Stone CLadding [1234.5]; MNHRS [8024 h]; Cash Flow [180459 h]; Excavation [30] | 180,459 | FCD |  |  |  |  |
| BL3-XE-SOTH-20 |  | Aluminum Glazing | 30d | 2015-10-13 | 2015-11-11 | BL3-XE-NRTH-20, BL3-ST-11F-1070 | 81d | 0d | Aluminum Cladding [723.42]; MNHRS [4702.2 h]; Cash Flow [265147 h]; Excavation [30] | 265,146.7 | FCD |  |  |  |  |
|  | 3 | **West Elevation** |  | 2015-11-12 | 2015-12-11 |  |  |  |  |  |  |  |  |  |  |
| BL3-XE-WEST-10 |  | Stone Fixation | 30d | 2015-11-12 | 2015-12-11 | BL3-XE-SOTH-10, BL3-ST-11F-1070 | 81d | 0d | Stone CLadding [2745]; MNHRS [17846.7 h]; Cash Flow [401373 h]; Excavation [30] | 401,373 | FCD |  |  |  |  |
| BL3-XE-WEST-20 |  | Aluminum Glazing | 30d | 2015-11-12 | 2015-12-11 | BL3-XE-SOTH-20, BL3-ST-11F-1070 | 81d | 0d | Aluminum Cladding [1687.9]; MNHRS [10971.8 h]; Cash Flow [618676 h]; Excavation [30] | 618,675.7 | FCD |  |  |  |  |
|  | 4 | **East Elevation** |  | 2015-12-12 | 2016-01-10 |  |  |  |  |  |  |  |  |  |  |
| BL3-XE-EAST-10 |  | Stone Fixation | 30d | 2015-12-12 | 2016-01-10 | BL3-XE-WEST-10, BL3-ST-11F-1070 | 81d |  | Stone CLadding [2775.9]; MNHRS [18043.4 h]; Cash Flow [405797 h]; Excavation [30] | 405,796.6 | FCD |  |  |  |  |
| BL3-XE-EAST-20 |  | Aluminum Glazing | 30d | 2015-12-12 | 2016-01-10 | BL3-XE-WEST-20, BL3-ST-11F-1070 | 81d |  | Aluminum Cladding [1687.9]; MNHRS [10971.8 h]; Cash Flow [618676 h]; Excavation [30] | 618,675.7 | FCD |  |  |  |  |
|  | 16 | **Lift Installation** |  | 2015-10-13 | 2015-12-11 |  |  |  |  |  |  |  |  |  |  |
| BL3-LFT-10 |  | Lift Installation | 60d | 2015-10-13 | 2015-12-11 | BL3-ST-11F-1070 FS+30d | 111d | 0d | Cash Flow [365781 h]; Excavation [60] | 365,781.19 |  |  |  |  |  |
|  | 4 | **Podium** |  | 2014-04-02 | 2015-10-23 |  |  |  |  |  |  |  |  |  |  |
|  | 1 | **Part 4** |  | 2014-04-02 | 2015-08-04 |  |  |  |  |  |  |  |  |  |  |
|  | 1 | **Basement 2** |  | 2014-04-02 | 2015-07-29 |  |  |  |  |  |  |  |  |  |  |
|  | 1 | **Structural** |  | 2014-04-02 | 2014-06-04 |  |  |  |  |  |  |  |  |  |  |
| P4-ST-B2-1000 |  | Blinding | 5d | 2014-04-02 | 2014-04-07 | GEN1000, BL1-ST-B2-1060 | 112d | 0d | Excavation [5] |  |  | STR |  |  |  |
| P4-ST-B2-1010 |  | Waterproofing | 14d | 2014-04-08 | 2014-04-23 | P4-ST-B2-1000 | 112d | 0d | MNHRS [182.77 h]; Waterproofing [449]; Excavation [14] |  |  | STR |  |  |  |
| P4-ST-B2-1020 |  | Formwork | 12d | 2014-04-24 | 2014-05-08 | P4-ST-B2-1000, P4-ST-B2-1010 | 112d | 0d | MNHRS [21658.1 h]; Cash Flow [175724 h]; FW [3057.7]; Excavation [12] | 175,724.37 |  | STR |  |  |  |
| P4-ST-B2-1030 |  | Reinforcement | 22d | 2014-05-10 | 2014-06-03 | P4-ST-B2-1020, ENG-STR-APP120 | 112d | 0d | MNHRS [2768.75 h]; Cash Flow [341628 h]; Reinforcement [146917]; Excavation [22] | 341,628.38 |  | STR |  |  |  |
| P4-ST-B2-1040 |  | MEP Works in Raft | 5d | 2014-05-29 | 2014-06-03 | ENGMEP8700, P4-ST-B2-1030 FF | 112d | 0d | Cash Flow [13051 h]; Plumber [312 h]; Excavation [5] | 13,051 |  |  | MEP | PL & D | B.W |
| P4-ST-B2-1050 |  | Earthing Works | 5d | 2014-05-29 | 2014-06-03 | P4-ST-B2-1040 SS, ENGMEP8700, ENGMEP8910, PROCMEPELE1810, P4-ST-B2-1030 FF | 112d | 0d | Cash Flow [8362.29 h]; Electrician [408 h]; Excavation [5] | 8,362.29 |  |  | MEP | EL | B.W |
| P4-ST-B2-1060 |  | Concrete for Raft | 1d | 2014-06-04 | 2014-06-04 | P4-ST-B2-1030, P4-ST-B2-1040, P4-ST-B2-1050 | 112d | 0d | MNHRS [14424.9 h]; Cash Flow [443936 h]; Concrete [1742.75]; Excavation [1] | 443,935.63 |  | STR |  |  |  |

| ID | WBS | Activity | Duration | Start | Finish | Predecessors | Total float | Free float | Resources | Cost | Responsibility | MEP Systems |
| --- | --- | --- | --- | --- | --- | --- | --- | --- | --- | --- | --- | --- |
|  | 2 | **Fiishing** |  |  |  |  |  |  |  |  |  |  |
|  | 4 | **MEP Works** |  | 2014-08-25 | 2015-07-29 |  |  |  |  |  |  |  |
|  | 1 | **Mechanical System** |  | 2014-08-25 | 2015-07-08 |  |  |  |  |  |  |  |
|  | 2 | **HVAC Works** |  | 2014-08-25 | 2015-05-11 |  |  |  |  |  |  |  |
|  | 1 | **1st Fix** |  | 2014-08-25 | 2014-09-07 |  |  |  |  |  |  |  |
| P4-MEP-AC-B2-1000 |  | Supports and Hungers Fixing | 12d | 2014-08-25 | 2014-09-07 | OFF-ENG-MEP-AC1130, OFF-PRO-MEP-DR1020, P4-ST-B1-1080 FS+14d, P4-ST-B1-1080 FF+14d | 416d | 30d | Cash Flow [17480 h]; Ductman [192 h]; Excavation [12] | 17,479.95 | MEP | AC |
|  | 3 | **2nd Fix** |  | 2014-12-22 | 2015-01-21 |  |  |  |  |  |  |  |
| P4-MEP-AC-B2-2000 |  | Fan's Installation | 25d | 2014-12-22 | 2015-01-21 | P4-MEP-AC-B2-1000, OFF-PRO-MEP-AC1470, P4-ST-B1-1080 FS+14d | 333d | 0d | Cash Flow [102656 h]; Ductman [134.4 h]; Excavation [25] | 102,656.42 | MEP | AC |
|  | 4 | **Final Fix** |  | 2015-04-30 | 2015-05-11 |  |  |  |  |  |  |  |
| P4-MEP-AC-B2-3000 |  | Grills and Diffusers Fixing | 10d | 2015-04-30 | 2015-05-11 | P4-MEP-AC-B2-2000, OFF-PRO-MEP-AC1140, P4-ST-B1-1080 FS+14d | 260d | 0d | Cash Flow [157320 h]; Ductman [320 h]; Excavation [10] | 157,319.53 | MEP | AC |
|  | 1 | **Plumbing and Drainage Works** |  | 2014-08-25 | 2015-07-08 |  |  |  |  |  |  |  |
|  | 1 | **1st Fix** |  | 2014-08-25 | 2014-09-14 |  |  |  |  |  |  |  |
| P4-MEP-PL-B2-1010 |  | Supports installation for High level Pipes | 18d | 2014-08-25 | 2014-09-14 | OFF-ENG-MEP-DR1100, OFF-ENG-MEP-WS1090, OFF-PRO-MEP-DR1020, P4-ST-B1-1080 FS+14d, P4-ST-B1-1080 FF+14d | 390d | 0d | Cash Flow [150.97 h]; Plumber [16.35 h]; Excavation [18] | 150.97 | MEP | PL & D |
|  | 3 | **2nd Fix** |  | 2014-09-15 | 2015-07-08 |  |  |  |  |  |  |  |
| P4-MEP-PL-B2-2000 |  | High Level Drainage Pipes Installation | 21d | 2014-09-15 | 2014-10-13 | OFF-PRO-MEP-DR1050, P4-MEP-PL-B2-1010, P4-ST-B1-1080 FS+14d | 408d | 14.5d | Cash Flow [6562.53 h]; Plumber [244.38 h]; Excavation [21] | 6,562.53 | MEP | PL & D |
| P4-MEP-PL-B2-1000 |  | Parking Drain Installation | 6d | 2014-10-23 | 2014-11-02 | OFF-ENG-MEP-DR1100, OFF-PRO-MEP-DR1050, P4-ST-B1-1080 FS+30d, OFF-PRO-MEP-DR1080 | 408.5d | 0d | Cash Flow [547.83 h]; Plumber [6 h]; Excavation [6] | 547.83 | MEP | PL & D |
| P4-MEP-PL-B2-2010 |  | Drainage Pipes Gravity Test | 6d | 2014-11-02 | 2014-11-10 | P4-MEP-PL-B2-2000, P4-MEP-PL-B2-1000, P4-ST-B1-1080 FS+14d | 408.5d | 15.5d | Cash Flow [820.24 h]; Plumber [7.97 h]; Excavation [6] | 820.24 | MEP | PL & D |
| P4-MEP-PL-B2-2020 |  | High Level Water Supply Pipes and Fittings Installation | 21d | 2014-11-22 | 2014-12-15 | OFF-PRO-MEP-WS1020, OFF-PRO-MEP-WS1110, P4-MEP-PL-B2-1010, P4-ST-B1-1080 FS+14d | 339d | 0d | Cash Flow [2145.06 h]; Plumber [150.02 h]; Excavation [21] | 2,145.06 | MEP | PL & D |
| P4-MEP-PL-B2-2030 |  | Water Supply Pipes Pressure Test | 6d | 2014-12-16 | 2014-12-22 | P4-MEP-PL-B2-2020, P4-ST-B1-1080 FS+14d | 339d | 15d | Cash Flow [126.18 h]; Plumber [11.24 h]; Excavation [6] | 126.18 | MEP | PL & D |
| P4-MEP-PL-B2-2040 |  | Booster Pumps Installation Including Connection | 30d | 2015-06-09 | 2015-07-08 | P4-MEP-PL-B2-2030, OFF-PRO-MEP-WS1190, P4-ST-B1-1080 FS+14d | 196d | 0d | Cash Flow [28689.1 h]; Plumber [625 h]; Excavation [30] | 28,689.1 | MEP | PL & D |
|  | 4 | **Final Fix** |  | 2015-05-05 | 2015-05-11 |  |  |  |  |  |  |  |
| P4-MEP-PL-B2-3000 |  | Manhole Covers Installation | 6d | 2015-05-05 | 2015-05-11 | P4-MEP-PL-B2-2010, P4-ST-B1-1080 FS+14d, P4-MEP-AC-B2-3000 FF | 260d | 0d | Cash Flow [488.57 h]; Plumber [37.5 h]; Excavation [6] | 488.57 | MEP | PL & D |
|  | 3 | **Fire Fighting Works** |  | 2014-08-25 | 2015-02-16 |  |  |  |  |  |  |  |
|  | 1 | **1st Fix** |  | 2014-08-25 | 2014-09-07 |  |  |  |  |  |  |  |
| P4-MEP-FF-B2-1000 |  | Supports and Hungers installation | 12d | 2014-08-25 | 2014-09-07 | OFF-ENG-MEP-FF1090, OFF-PRO-MEP-DR1020, P4-ST-B1-1080 FS+14d, P4-ST-B1-1080 FF+14d | 415d | 30d | Cash Flow [35.86 h]; Plumber [16.35 h]; Excavation [12] | 35.86 | MEP | FF |

| ID | WBS | Activity | Duration | Start | Finish | Predecessors | Total float | Free float | Resources | Cost | Responsibility | MEP Systems | MEP Steps | Fix |
| --- | --- | --- | --- | --- | --- | --- | --- | --- | --- | --- | --- | --- | --- | --- |
|  | 3 | **2nd Fix** |  | 2014-12-10 | 2015-02-16 |  |  |  |  |  |  |  |  |  |
| P4-MEP-FF-B2-2000 |  | Sprinkler Pipes and Fittings Installation | 21d | 2014-12-10 | 2015-01-05 | P4-MEP-FF-B2-1000, OFF-PRO-MEP-FF1070, P4-ST-B1-1080 FS+14d | 342d | 0d | Cash Flow [35356.3 h]; Plumber [244.38 h]; Excavation [21] | 35,356.33 | MEP | FF |  |  |
| P4-MEP-FF-B2-2010 |  | Sprinkler Pipes Pressure Test | 6d | 2015-01-06 | 2015-01-12 | P4-MEP-FF-B2-2000, P4-ST-B1-1080 FS+14d | 351d | 0d | Cash Flow [1964.24 h]; Plumber [7.97 h]; Excavation [6] | 1,964.24 | MEP | FF |  |  |
| P4-MEP-FF-B2-2020 |  | Fire Fighting Pumps Installation Including Connection | 30d | 2015-01-13 | 2015-02-16 | OFF-ENG-MEP-FF1170, OFF-PRO-MEP-FF1040, P4-ST-B1-1080 FS+14d | 323d | 127d | Cash Flow [508188 h]; Plumber [450 h]; Excavation [30] | 508,187.68 | MEP | FF |  |  |
|  | 4 | **Final Fix** |  | 2015-01-13 | 2015-01-26 |  |  |  |  |  |  |  |  |  |
| P4-MEP-FF-B2-3000 |  | Sprinkler Head Installation | 12d | 2015-01-13 | 2015-01-26 | P4-MEP-FF-B2-2010, P4-ST-B1-1080 FS+14d | 351d | 9d | Plumber [45 h]; Cash Flow [4522.33 h]; Excavation [12] | 4,522.33 | MEP | FF |  |  |
|  | 3 | **Electrical System** |  | 2014-09-01 | 2015-07-29 |  |  |  |  |  |  |  |  |  |
|  | 1 | **1st Fix** |  | 2014-09-01 | 2014-09-21 |  |  |  |  |  |  |  |  |  |
| P4-MEP-EL-B2-1010 |  | PVC Back Boxes and Conduits Fixing in Wall | 12d | 2014-09-01 | 2014-09-14 | ENGMEP8810, ENGMEP9030, ENGMEP9190, ENGMEP9470, ENGMEP9610, PROCMEPELE1990, PROCMEPELE2080, P4-ST-B1-1080 FS+20d | 386d | 0d | Cash Flow [3307.67 h]; Electrician [384 h]; Excavation [12] | 3,307.67 | MEP | EL | 1st Fix | 1f |
| P4-MEP-EL-B2-1000 |  | DB's Inclosure Fixing | 6d | 2014-09-15 | 2014-09-21 | ENGMEP8810, P4-ST-B1-1080 FS+25d, P4-MEP-EL-B2-1010 | 386d | 0d | Cash Flow [2130.4 h]; Electrician [96 h]; Excavation [6] | 2,130.4 | MEP | EL | 1st Fix | 1f |
|  | 2 | **2nd Fix** |  | 2014-09-15 | 2015-01-12 |  |  |  |  |  |  |  |  |  |
| P4-MEP-EL-B2-2010 |  | SMDB's Installation | 6d | 2014-09-15 | 2014-09-21 | P4-MEP-EL-B2-1010, P4-ST-B1-1080 FS+14d, PROCMEPELE9380 | 426d | 38d | Cash Flow [4970.93 h]; Electrician [48 h]; Excavation [6] | 4,970.93 | MEP | EL | 2nd Fix | 2f |
| P4-MEP-EL-B2-2050 |  | Power Points Wiring | 12d | 2014-09-15 | 2014-09-28 | PROCMEPELE5680, P4-MEP-EL-B2-1010, P4-ST-B1-1080 FS+14d | 404d | 18d | Cash Flow [2894.21 h]; Electrician [192 h]; Excavation [12] | 2,894.21 | MEP | EL | 2nd Fix | 2f |
| P4-MEP-EL-B2-2000 |  | DB's Installation and Termination | 12d | 2014-09-22 | 2014-10-09 | P4-MEP-EL-B2-1000, P4-ST-B1-1080 FS+14d, PROCMEPELE8920 | 386d | 0d | Cash Flow [4970.93 h]; Electrician [288 h]; Excavation [12] | 4,970.93 | MEP | EL | 2nd Fix | 2f |
| P4-MEP-EL-B2-2020 |  | Cable Tray and Trunking Installation | 21d | 2014-09-25 | 2014-10-23 | PROCMEPELE3340, P4-ST-B1-1080 FS+14d, PROCMEPELE6940 | 379d | 0d | Cash Flow [9064.45 h]; Electrician [504 h]; Excavation [21] | 9,064.45 | MEP | EL | 2nd Fix | 2f |
| P4-MEP-EL-B2-2040 |  | Lighting Wiring | 12d | 2014-10-11 | 2014-10-23 | PROCMEPELE5680, P4-MEP-EL-B2-1010, P4-ST-B1-1080 FS+14d, P4-MEP-EL-B2-2000 | 386d | 0d | Cash Flow [3566.08 h]; Electrician [241.71 h]; Excavation [12] | 3,566.08 | MEP | EL | 2nd Fix | 2f |
| P4-MEP-EL-B2-3040 |  | Power Cable Puling | 14d | 2014-10-26 | 2014-11-12 | P4-MEP-EL-B2-2020, P4-MEP-EL-B2-2040, P4-MEP-EL-B2-2050, P4-ST-B1-1080 FS+14d | 386d | 0d | Cash Flow [13632.3 h]; Electrician [168 h]; Excavation [14] | 13,632.33 | MEP | EL | 2nd Fix | 2f |
| P4-MEP-EL-B2-2030 |  | Fire Alarm System Wiring | 12d | 2014-12-02 | 2014-12-15 | PROCMEPELE8650, P4-MEP-EL-B2-1010, P4-ST-B1-1080 FS+14d | 365d | 0d | Cash Flow [7111.01 h]; Electrician [192 h]; Excavation [12] | 7,111.01 | MEP | EL | 2nd Fix | 2f |
| P4-MEP-EL-B2-2060 |  | BMS System Wiring | 8d | 2014-12-23 | 2014-12-31 | PROCMEPELE9100, P4-MEP-EL-B2-1010, P4-ST-B1-1080 FS+14d | 347d | 0d | Cash Flow [15183.4 h]; Electrician [186 h]; Excavation [8] | 15,183.44 | MEP | EL | 2nd Fix | 2f |
| P4-MEP-EL-B2-2070 |  | Emergency Light Wiring | 8d | 2015-01-04 | 2015-01-12 | PROCMEPELE9330, P4-MEP-EL-B2-1010, P4-ST-B1-1080 FS+14d, P4-MEP-EL-B2-2060 | 347d | 0d | Cash Flow [1202.03 h]; Electrician [128 h]; Excavation [8] | 1,202.03 | MEP | EL | 2nd Fix | 2f |
|  | 3 | **Final Fix** |  | 2014-11-13 | 2015-07-29 |  |  |  |  |  |  |  |  |  |
| P4-MEP-EL-B2-3030 |  | SMDB's Termination and Final Connection | 6d | 2014-11-13 | 2014-11-19 | P4-MEP-EL-B2-2010, P4-MEP-EL-B2-2050, P4-ST-B1-1080 FS+14d, P4-MEP-EL-B2-3040 | 392d | 0d | Cash Flow [2785.83 h]; Electrician [192 h]; Excavation [6] | 2,785.82 | MEP | EL | Final F | ff |
| P4-MEP-EL-B2-3020 |  | Lights Fitting Fixing | 14d | 2014-11-20 | 2014-12-06 | PROCMEPELE8560, P4-MEP-EL-B2-2040, P4-ST-B1-1080 FS+14d, P4-MEP-EL-B2-3030 | 392d | 42d | Cash Flow [7322.66 h]; Electrician [244 h]; Excavation [14] | 7,322.66 | MEP | EL | Final F | ff |
| P4-MEP-EL-B2-3010 |  | Fire Alarm System Detector Installation | 12d | 2014-12-16 | 2014-12-29 | P4-MEP-EL-B2-2030, P4-ST-B1-1080 FS+14d | 365d | 18d | Cash Flow [4034.38 h]; Electrician [192 h]; Excavation [12] | 4,034.38 | MEP | EL | Final F | ff |
| P4-MEP-EL-B2-3050 |  | Sockets and Switches Fixing | 8d | 2015-03-26 | 2015-04-04 | PROCMEPELE8830, P4-MEP-EL-B2-2050, P4-ST-B1-1080 FS+14d | 297d | 0d | Cash Flow [1166.96 h]; Electrician [128 h]; Excavation [8] | 1,166.96 | MEP | EL | Final F | ff |
| P4-MEP-EL-B2-3060 |  | Emergency Light Fixing | 8d | 2015-03-26 | 2015-04-04 | P4-MEP-EL-B2-3050 SS, P4-MEP-EL-B2-2070, P4-ST-B1-1080 FS+14d, P4-MEP-EL-B2-3010, PROCMEPELE9330 | 297d | 0d | Cash Flow [5714.02 h]; Electrician [128 h]; Excavation [8] | 5,714.02 | MEP | EL | Final F | ff |
| P4-MEP-EL-B2-3070 |  | Panels for Mechanical Equipments Installation and Final Connection | 21d | 2015-07-09 | 2015-07-29 | P4-MEP-EL-B2-3040, P4-MEP-AC-B2-2000, P4-MEP-PL-B2-2040, P4-MEP-FF-B2-2020, P4-ST-B1-1080 FS+14d | 196d | 0d | Cash Flow [173.65 h]; Electrician [21 h]; Excavation [21] | 173.65 | MEP | EL | Final F | ff |
| P4-MEP-EL-B2-3000 |  | CO2 System Installation | 6d | 2015-07-24 | 2015-07-29 | P4-ST-B1-1080 FS+14d, P4-MEP-EL-B2-3070 FF | 196d | 0d | Cash Flow [21027.8 h]; Electrician [179.65 h]; Excavation [6] | 21,027.76 | MEP | EL | Final F | ff |

| ID | WBS | Activity | Duration | Start | Finish | Predecessors | Total float | Free float | Resources | Cost | Structural | Responsibility | MEP Systems | MEP Steps | Fix |
| --- | --- | --- | --- | --- | --- | --- | --- | --- | --- | --- | --- | --- | --- | --- | --- |
|  | 2 | **Basement 1** |  | 2014-06-05 | 2015-08-04 |  |  |  |  |  |  |  |  |  |  |
|  | 1 | **Structural** |  | 2014-06-05 | 2014-08-07 |  |  |  |  |  |  |  |  |  |  |
| P4-ST-B1-1000 |  | Reinforcement for Verticals | 12d | 2014-06-05 | 2014-06-18 | P4-ST-B2-1060 | 112d | 0d | MNHRS [894.2 h]; Cash Flow [105175 h]; Reinforcement [47381.3]; Excavation [12] | 105,175 | STR |  |  |  |  |
| P4-ST-B1-1010 |  | MEP Works in Vertical Element | 5d | 2014-06-14 | 2014-06-18 | ENGMEP8620, P4-ST-B1-1000 FF | 120d | 8d | Cash Flow [1798.55 h]; Electrician [160 h]; Excavation [5] | 1,798.55 |  | MEP | EL | B.W |  |
| P4-ST-B1-1020 |  | FW for Verticals | 8d | 2014-06-21 | 2014-06-29 | P4-ST-B1-1000 | 112d | 0d | MNHRS [17712 h]; Cash Flow [143709 h]; FW [2500.6]; Excavation [8] | 143,708.65 | STR |  |  |  |  |
| P4-ST-B1-1030 |  | Concrete Verticals | 1d | 2014-06-30 | 2014-06-30 | P4-ST-B1-1020, P4-ST-B1-1010 | 112d | 0d | MNHRS [3190.81 h]; Cash Flow [45189.6 h]; Concrete [385.5]; Excavation [1] | 45,189.6 | STR |  |  |  |  |
| P4-ST-B1-1040 |  | FW for Slab | 10d | 2014-07-01 | 2014-07-20 | P4-ST-B1-1030 | 112d | 0d | MNHRS [21904.2 h]; Cash Flow [172721 h]; FW [3092.5]; Excavation [10] | 172,721 | STR |  |  |  |  |
| P4-ST-B1-1060 |  | Reinforcement for Slab | 10d | 2014-07-21 | 2014-08-06 | P4-ST-B1-1040 | 112d | 0d | MNHRS [2721.8 h]; Cash Flow [335840 h]; Reinforcement [144428]; Excavation [10] | 335,840.19 | STR |  |  |  |  |
| P4-ST-B1-1070 |  | MEP Works in Slab & Beams | 5d | 2014-08-02 | 2014-08-06 | ENGMEP8620, P4-ST-B1-1060 FF | 112d | 0d | Cash Flow [3349.02 h]; Electrician [320 h]; Excavation [5] | 3,349.02 |  | MEP | EL | B.W |  |
| P4-ST-B1-1080 |  | Concrete for Slab | 1d | 2014-08-07 | 2014-08-07 | P4-ST-B1-1060, P4-ST-B1-1070 | 112d | 0d | MNHRS [7087.21 h]; Cash Flow [213812 h]; Concrete [856.25]; Excavation [1] | 213,812 | STR |  |  |  |  |
|  | 2 | **Fiishing** |  |  |  |  |  |  |  |  |  |  |  |  |  |
|  | 4 | **MEP Work** |  | 2014-10-18 | 2015-08-04 |  |  |  |  |  |  |  |  |  |  |
|  | 1 | **Mechanical System** |  | 2014-10-18 | 2015-05-23 |  |  |  |  |  |  |  |  |  |  |
|  | 2 | **HVAC Works** |  | 2014-10-18 | 2015-05-23 |  |  |  |  |  |  |  |  |  |  |
|  | 1 | **1st Fix** |  | 2014-10-18 | 2014-11-02 |  |  |  |  |  |  |  |  |  |  |
| P4-MEP-AC-B1-1000 |  | Supports and Hungers Fixing | 12d | 2014-10-18 | 2014-11-02 | OFF-ENG-MEP-AC1140, P4-MEP-AC-B2-1000, P4-ST-GF-1060 FS+14d | 399d | 66d | Cash Flow [17480 h]; Ductman [192 h]; Excavation [12] | 17,479.95 |  | MEP | AC |  | 1f |
|  | 3 | **2nd Fix** |  | 2015-01-22 | 2015-02-19 |  |  |  |  |  |  |  |  |  |  |
| P4-MEP-AC-B1-2000 |  | Fan's Installation | 25d | 2015-01-22 | 2015-02-19 | P4-MEP-AC-B1-1000, P4-ST-GF-1060 FS+14d, P4-MEP-AC-B2-2000 | 333d | 69d | Cash Flow [102656 h]; Ductman [134.4 h]; Excavation [25] | 102,656.42 |  | MEP | AC |  | 2f |
|  | 4 | **Final Fix** |  | 2015-05-12 | 2015-05-23 |  |  |  |  |  |  |  |  |  |  |
| P4-MEP-AC-B1-3000 |  | Grills and Diffusers Fixing | 10d | 2015-05-12 | 2015-05-23 | P4-MEP-AC-B1-2000, P4-MEP-AC-B2-3000, P4-ST-GF-1060 FS+14d | 264d | 183d | Cash Flow [157320 h]; Ductman [320 h]; Excavation [10] | 157,319.53 |  | MEP | AC |  | ff |
|  | 1 | **Plumbing and Drainage Works** |  | 2014-10-18 | 2015-05-18 |  |  |  |  |  |  |  |  |  |  |
|  | 1 | **1st Fix** |  | 2014-10-18 | 2014-11-02 |  |  |  |  |  |  |  |  |  |  |
| P4-MEP-PL-B1-1000 |  | Supports installation for High level Pipes | 12d | 2014-10-18 | 2014-11-02 | OFF-ENG-MEP-DR1110, OFF-ENG-MEP-WS1100, P4-MEP-PL-B2-1010, P4-ST-GF-1060 FS+14d | 386d | 0d | Cash Flow [819.68 h]; Plumber [16.35 h]; Excavation [12] | 819.68 |  | MEP | PL & D |  | 1f |
|  | 3 | **2nd Fix** |  | 2014-11-02 | 2015-01-18 |  |  |  |  |  |  |  |  |  |  |
| P4-MEP-PL-B1-2000 |  | Parking Drain Installation | 6d | 2014-11-02 | 2014-11-10 | OFF-ENG-MEP-DR1110, P4-MEP-PL-B2-1000, P4-ST-GF-1060 FS+14d | 408.5d | 15.5d | Cash Flow [547.83 h]; Plumber [48 h]; Excavation [6] | 547.83 |  | MEP | PL & D |  | 2f |
| P4-MEP-PL-B1-2010 |  | High Level Drainage Pipes Installation | 21d | 2014-11-04 | 2014-11-27 | P4-MEP-PL-B1-1000, P4-MEP-PL-B2-2000, P4-ST-GF-1060 FS+14d | 393d | 0d | Cash Flow [6562.53 h]; Plumber [244.38 h]; Excavation [21] | 6,562.53 |  | MEP | PL & D |  | 2f |
| P4-MEP-PL-B1-2020 |  | Drainage Pipes Gravity Test | 6d | 2014-11-29 | 2014-12-04 | P4-MEP-PL-B1-2010, P4-MEP-PL-B1-2000, P4-ST-GF-1060 FS+14d, P4-MEP-PL-B2-2010 | 393d | 133d | Cash Flow [820.24 h]; Plumber [48 h]; Excavation [6] | 820.24 |  | MEP | PL & D |  | 2f |
| P4-MEP-PL-B1-2030 |  | High Level Water Supply Pipes and Fittings Installation | 21d | 2014-12-16 | 2015-01-11 | P4-MEP-PL-B1-1000, P4-MEP-PL-B2-2020, P4-ST-GF-1060 FS+14d | 350d | 0d | Cash Flow [1308.6 h]; Plumber [150.02 h]; Excavation [21] | 1,308.6 |  | MEP | PL & D |  | 2f |
| P4-MEP-PL-B1-2040 |  | Water Supply Pipes Pressure Test | 6d | 2015-01-12 | 2015-01-18 | P4-MEP-PL-B1-2030, P4-ST-GF-1060 FS+14d, P4-MEP-PL-B2-2030 | 350d | 290d | Cash Flow [145.74 h]; Plumber [48 h]; Excavation [6] | 145.74 |  | MEP | PL & D |  | 2f |

| ID | WBS | Activity | Duration | Start | Finish | Predecessors | Total float | Free float | Resources | Cost | Responsibility | MEP Systems | Fix | MEP Steps |
| --- | --- | --- | --- | --- | --- | --- | --- | --- | --- | --- | --- | --- | --- | --- |
|  | 4 | **Final Fix** |  | 2015-05-12 | 2015-05-18 |  |  |  |  |  |  |  |  |  |
| P4-MEP-PL-B1-3000 |  | Manhole Covers Installation | 6d | 2015-05-12 | 2015-05-18 | P4-MEP-PL-B2-3000, P4-MEP-PL-B1-2020, P4-ST-GF-1060 FS+14d | 260d | 187d | Cash Flow [488.57 h]; Plumber [37.5 h]; Excavation [6] | 488.57 | MEP | PL & D | ff |  |
|  | 3 | **Fire Fighting Works** |  | 2014-10-18 | 2015-02-19 |  |  |  |  |  |  |  |  |  |
|  | 1 | **1st Fix** |  | 2014-10-18 | 2014-11-02 |  |  |  |  |  |  |  |  |  |
| P4-MEP-FF-B1-1000 |  | Supports and Hungers installation | 12d | 2014-10-18 | 2014-11-02 | OFF-ENG-MEP-FF1100, P4-MEP-FF-B2-1000, P4-ST-GF-1060 FS+14d | 394d | 52d | Cash Flow [35.86 h]; Plumber [288 h]; Excavation [12] | 35.86 | MEP | FF | 1f |  |
|  | 3 | **2nd Fix** |  | 2015-01-06 | 2015-02-05 |  |  |  |  |  |  |  |  |  |
| P4-MEP-FF-B1-2000 |  | Sprinkler Pipes and Fittings Installation | 21d | 2015-01-06 | 2015-01-29 | P4-MEP-FF-B1-1000, P4-MEP-FF-B2-2000, P4-ST-GF-1060 FS+14d | 342d | 0d | Cash Flow [35356.3 h]; Plumber [672 h]; Excavation [21] | 35,356.33 | MEP | FF | 2f |  |
| P4-MEP-FF-B1-2010 |  | Sprinkler Pipes Pressure Test | 6d | 2015-01-31 | 2015-02-05 | P4-MEP-FF-B1-2000, P4-ST-GF-1060 FS+14d | 342d | 0d | Cash Flow [1964.24 h]; Plumber [96 h]; Excavation [6] | 1,964.24 | MEP | FF | 2f |  |
|  | 4 | **Final Fix** |  | 2015-02-07 | 2015-02-19 |  |  |  |  |  |  |  |  |  |
| P4-MEP-FF-B1-3000 |  | Sprinkler Head Installation | 12d | 2015-02-07 | 2015-02-19 | P4-MEP-FF-B1-2010, P4-MEP-FF-B2-3000, P4-ST-GF-1060 FS+14d | 342d | 262d | Plumber [576 h]; Cash Flow [4522.33 h]; Excavation [12] | 4,522.33 | MEP | FF | ff |  |
|  | 3 | **Electrical System** |  | 2014-10-26 | 2015-08-04 |  |  |  |  |  |  |  |  |  |
|  | 1 | **1st Fix** |  | 2014-11-09 | 2014-11-29 |  |  |  |  |  |  |  |  |  |
| P4-MEP-EL-B1-1010 |  | PVC Back Boxes and Conduits Fixing in Wall | 12d | 2014-11-09 | 2014-11-22 | ENGMEP9620, ENGMEP9480, ENGMEP9200, ENGMEP9040, ENGMEP8820, ENGMEP8620, PROCMEPELE1990, PROCMEPELE2080, P4-ST-GF-1060 FS+30d, P4-MEP-EL-B2-1010 | 366d | 0d | Cash Flow [3307.67 h]; Electrician [384 h]; Excavation [12] | 3,307.67 | MEP | EL | 1f | 1st Fix |
| P4-MEP-EL-B1-1000 |  | DB's Inclosure Fixing | 6d | 2014-11-23 | 2014-11-29 | ENGMEP8820, ENGMEP8620, P4-ST-GF-1060 FS+14d, P4-MEP-EL-B2-1000, P4-MEP-EL-B1-1010 | 386d | 0d | Cash Flow [2130.4 h]; Electrician [96 h]; Excavation [6] | 2,130.4 | MEP | EL | 1f | 1st Fix |
|  | 2 | **2nd Fix** |  | 2014-10-26 | 2015-01-21 |  |  |  |  |  |  |  |  |  |
| P4-MEP-EL-B1-2020 |  | Cable Tray and Trunking Installation | 21d | 2014-10-26 | 2014-11-20 | PROCMEPELE3340, P4-ST-GF-1060 FS+14d, P4-MEP-EL-B2-2020 | 379d | 13d | Cash Flow [9064.45 h]; Electrician [504 h]; Excavation [21] | 9,064.45 | MEP | EL | 2f | 2nd Fix |
| P4-MEP-EL-B1-2010 |  | SMDB's , MDB's Installation | 12d | 2014-11-23 | 2014-12-06 | P4-MEP-EL-B1-1010, P4-ST-GF-1060 FS+14d, P4-MEP-EL-B2-2010 | 380d | 30d | Cash Flow [4196.6 h]; Electrician [336 h]; Excavation [12] | 4,196.6 | MEP | EL | 2f | 2nd Fix |
| P4-MEP-EL-B1-2040 |  | Lighting Wiring | 12d | 2014-11-23 | 2014-12-06 | P4-MEP-EL-B1-1010, PROCMEPELE5680, P4-ST-GF-1060 FS+14d, P4-MEP-EL-B2-2040, P4-MEP-EL-B2-2040 FF | 366d | 0d | Cash Flow [3566.08 h]; Electrician [241.71 h]; Excavation [12] | 3,566.08 | MEP | EL | 2f | 2nd Fix |
| P4-MEP-EL-B1-2050 |  | Power Points Wiring | 12d | 2014-11-23 | 2014-12-06 | P4-MEP-EL-B1-1010, PROCMEPELE5680, P4-ST-GF-1060 FS+14d, P4-MEP-EL-B2-2050 | 366d | 0d | Cash Flow [2894.21 h]; Electrician [192 h]; Excavation [12] | 2,894.21 | MEP | EL | 2f | 2nd Fix |
| P4-MEP-EL-B1-2000 |  | DB's Installation and Termination | 12d | 2014-11-30 | 2014-12-13 | P4-MEP-EL-B1-1000, P4-ST-GF-1060 FS+14d, P4-MEP-EL-B2-2000 | 386d | 36d | Cash Flow [4970.93 h]; Electrician [288 h]; Excavation [12] | 4,970.93 | MEP | EL | 2f | 2nd Fix |
| P4-MEP-EL-B1-3040 |  | Power Cable Puling | 14d | 2014-12-07 | 2014-12-22 | P4-MEP-EL-B1-2020, P4-MEP-EL-B1-2040, P4-MEP-EL-B1-2050, P4-ST-GF-1060 FS+14d, P4-MEP-EL-B2-3040 | 366d | 16d | Cash Flow [13632.3 h]; Electrician [168 h]; Excavation [14] | 13,632.33 | MEP | EL | 2f | 2nd Fix |
| P4-MEP-EL-B1-2030 |  | Fire Alarm System Wiring | 12d | 2014-12-16 | 2014-12-29 | P4-MEP-EL-B1-1010, PROCMEPELE8650, P4-ST-GF-1060 FS+14d, P4-MEP-EL-B2-2030 | 365d | 18d | Cash Flow [7111.01 h]; Electrician [192 h]; Excavation [12] | 7,111.01 | MEP | EL | 2f | 2nd Fix |
| P4-MEP-EL-B1-2060 |  | BMS System Wiring | 8d | 2015-01-04 | 2015-01-12 | P4-MEP-EL-B1-1010, PROCMEPELE9100, P4-ST-GF-1060 FS+14d, P4-MEP-EL-B2-2060 | 350d | 0d | Cash Flow [15183.4 h]; Electrician [186 h]; Excavation [8] | 15,183.44 | MEP | EL | 2f | 2nd Fix |
| P4-MEP-EL-B1-2070 |  | Emergency Light Wiring | 8d | 2015-01-13 | 2015-01-21 | P4-MEP-EL-B1-1010, PROCMEPELE9330, P4-ST-GF-1060 FS+14d, P4-MEP-EL-B2-2070 | 347d | 0d | Cash Flow [1202.03 h]; Electrician [128 h]; Excavation [8] | 1,202.03 | MEP | EL | 2f | 2nd Fix |

| ID | WBS | Activity | Duration | Start | Finish | Predecessors | Total float | Free float | Resources | Cost | Responsibility | MEP Systems | MEP Steps | Fix | Structural |
| --- | --- | --- | --- | --- | --- | --- | --- | --- | --- | --- | --- | --- | --- | --- | --- |
|  | 3 | **Final Fix** |  | 2015-01-13 | 2015-08-04 |  |  |  |  |  |  |  |  |  |  |
| P4-MEP-EL-B1-3030 |  | SMDB's , MDB's Termination and Final Connection | 12d | 2015-01-13 | 2015-01-26 | P4-MEP-EL-B1-2010, P4-MEP-EL-B1-2050, P4-ST-GF-1060 FS+14d, P4-MEP-EL-B1-2060, P4-MEP-EL-B1-3040, P4-MEP-EL-B2-3030 | 350d | 0d | Cash Flow [20725.6 h]; Electrician [384 h]; Excavation [12] | 20,725.64 | MEP | EL | Final F | ff |  |
| P4-MEP-EL-B1-3010 |  | Fire Alarm System Detector Installation | 12d | 2015-01-22 | 2015-02-04 | P4-MEP-EL-B1-2030, P4-ST-GF-1060 FS+14d, P4-MEP-EL-B1-2070, P4-MEP-EL-B2-3010 | 347d | 50d | Cash Flow [4034.38 h]; Electrician [192 h]; Excavation [12] | 4,034.38 | MEP | EL | Final F | ff |  |
| P4-MEP-EL-B1-3020 |  | Lights Fitting Fixing | 14d | 2015-01-27 | 2015-02-11 | PROCMEPELE8560, P4-MEP-EL-B1-2040, P4-ST-GF-1060 FS+14d, P4-MEP-EL-B1-2000, P4-MEP-EL-B1-3040, P4-MEP-EL-B1-3030, P4-MEP-EL-B2-3020 | 350d | 312d | Cash Flow [7322.66 h]; Electrician [244 h]; Excavation [14] | 7,322.66 | MEP | EL | Final F | ff |  |
| P4-MEP-EL-B1-3050 |  | Sockets and Switches Fixing | 8d | 2015-04-05 | 2015-04-13 | PROCMEPELE8830, P4-MEP-EL-B1-2050, P4-ST-GF-1060 FS+14d, P4-MEP-EL-B2-3050 | 297d | 0d | Cash Flow [1166.96 h]; Electrician [128 h]; Excavation [8] | 1,166.96 | MEP | EL | Final F | ff |  |
| P4-MEP-EL-B1-3060 |  | Emergency Light Fixing | 8d | 2015-04-05 | 2015-04-13 | P4-MEP-EL-B1-3050 SS, P4-MEP-EL-B1-2070, P4-ST-GF-1060 FS+14d, P4-MEP-EL-B1-3010, P4-MEP-EL-B1-3040, P4-MEP-EL-B2-3060 | 297d | 106d | Cash Flow [5714.02 h]; Electrician [128 h]; Excavation [8] | 5,714.02 | MEP | EL | Final F | ff |  |
| P4-MEP-EL-B1-3000 |  | CO2 System Installation | 6d | 2015-07-30 | 2015-08-04 | P4-ST-GF-1060 FS+14d, P4-ST-GF-1060 FF+14d, P4-MEP-EL-B1-3060 FF, P4-MEP-EL-B2-3000 | 196d | 111d | Cash Flow [21027.8 h]; Electrician [179.65 h]; Excavation [6] | 21,027.76 | MEP | EL | Final F | ff |  |
|  | 4 | **Ground Floor** |  | 2014-08-09 | 2014-09-25 |  |  |  |  |  |  |  |  |  |  |
|  | 1 | **Structural** |  | 2014-08-09 | 2014-09-25 |  |  |  |  |  |  |  |  |  |  |
| P4-ST-GF-1000 |  | Reinforcement for Verticals | 12d | 2014-08-09 | 2014-08-21 | P4-ST-B1-1080 | 366d | 0d | MNHRS [894.2 h]; Cash Flow [110176 h]; Reinforcement [47381.3]; Excavation [12] | 110,175.68 |  |  |  |  | STR |
| P4-ST-GF-1010 |  | FW for Verticals | 8d | 2014-08-23 | 2014-08-31 | P4-ST-GF-1000 | 366d | 0d | MNHRS [17712 h]; Cash Flow [143709 h]; FW [2500.6]; Excavation [8] | 143,708.65 |  |  |  |  | STR |
| P4-ST-GF-1020 |  | Concrete Verticals | 1d | 2014-09-01 | 2014-09-01 | P4-ST-GF-1010 | 366d | 0d | MNHRS [3190.81 h]; Cash Flow [45189.6 h]; Concrete [385.5]; Excavation [1] | 45,189.6 |  |  |  |  | STR |
| P4-ST-GF-1030 |  | FW for Slab | 10d | 2014-09-02 | 2014-09-13 | P4-ST-GF-1020 | 366d | 0d | MNHRS [21904.2 h]; Cash Flow [177721 h]; FW [3092.5]; Excavation [10] | 177,721.39 |  |  |  |  | STR |
| P4-ST-GF-1050 |  | Reinforcement for Slab | 10d | 2014-09-14 | 2014-09-24 | P4-ST-GF-1030 | 366d | 0d | MNHRS [2721.8 h]; Cash Flow [335840 h]; Reinforcement [144428]; Excavation [10] | 335,840.19 |  |  |  |  | STR |
| P4-ST-GF-1060 |  | Concrete for Slab | 1d | 2014-09-25 | 2014-09-25 | P4-ST-GF-1050 | 366d | 0d | MNHRS [7087.21 h]; Cash Flow [218115 h]; Concrete [856.25]; Excavation [1] | 218,114.99 |  |  |  |  | STR |
|  | 2 | **Fiishing** |  |  |  |  |  |  |  |  |  |  |  |  |  |
|  | 3 | **GF** |  |  |  |  |  |  |  |  |  |  |  |  |  |
|  | 1 | **Structural** |  |  |  |  |  |  |  |  |  |  |  |  |  |
|  | 2 | **Fiishing** |  |  |  |  |  |  |  |  |  |  |  |  |  |
|  | 2 | **Part 5** |  | 2014-08-09 | 2015-05-23 |  |  |  |  |  |  |  |  |  |  |
|  | 1 | **Basement 2** |  | 2014-08-09 | 2015-05-11 |  |  |  |  |  |  |  |  |  |  |
|  | 1 | **Structural** |  | 2014-08-09 | 2014-09-30 |  |  |  |  |  |  |  |  |  |  |
| P5-ST-B2-1000 |  | Blinding | 5d | 2014-08-09 | 2014-08-13 | P4-ST-B1-1080 | 112d | 0d | Excavation [5] |  |  |  |  |  | STR |
| P5-ST-B2-1010 |  | Waterproofing | 10d | 2014-08-14 | 2014-08-25 | P5-ST-B2-1000 | 112d | 0d | MNHRS [182.77 h]; Waterproofing [449]; Excavation [10] |  |  |  |  |  | STR |
| P5-ST-B2-1020 |  | Formwork | 10d | 2014-08-26 | 2014-09-06 | P5-ST-B2-1000, P5-ST-B2-1010 | 112d | 0d | MNHRS [21658.1 h]; Cash Flow [175724 h]; FW [3057.7]; Excavation [10] | 175,724.37 |  |  |  |  | STR |
| P5-ST-B2-1030 |  | Reinforcement | 20d | 2014-09-07 | 2014-09-29 | P5-ST-B2-1020 | 112d | 0d | MNHRS [2768.75 h]; Cash Flow [341628 h]; Reinforcement [146917]; Excavation [20] | 341,628.38 |  |  |  |  | STR |
| P5-ST-B2-1040 |  | MEP Works in Raft | 5d | 2014-09-24 | 2014-09-29 | ENGMEP8700, P5-ST-B2-1030 FF | 112d | 0d | Cash Flow [13051 h]; Plumber [312 h]; Excavation [5] | 13,051 | MEP | PL & D | B.W |  |  |
| P5-ST-B2-1050 |  | Earthing Works | 5d | 2014-09-24 | 2014-09-29 | P5-ST-B2-1040 SS, ENGMEP8700, ENGMEP8910, PROCMEPELE1810, P5-ST-B2-1030 FF | 112d | 0d | Cash Flow [8362.29 h]; Electrician [408 h]; Excavation [5] | 8,362.29 | MEP | EL | B.W |  |  |
| P5-ST-B2-1060 |  | Concrete | 1d | 2014-09-30 | 2014-09-30 | P5-ST-B2-1030, P5-ST-B2-1040, P5-ST-B2-1050 | 112d | 0d | MNHRS [14424.9 h]; Cash Flow [443936 h]; Concrete [1742.75]; Excavation [1] | 443,935.63 |  |  |  |  | STR |

| ID | WBS | Activity | Duration | Start | Finish | Predecessors | Total float | Free float | Resources | Cost | Responsibility | MEP Systems | Fix |
| --- | --- | --- | --- | --- | --- | --- | --- | --- | --- | --- | --- | --- | --- |
|  | 2 | **Fiishing** |  |  |  |  |  |  |  |  |  |  |  |
|  | 4 | **MEP Works** |  | 2014-12-14 | 2015-05-11 |  |  |  |  |  |  |  |  |
|  | 1 | **Mechanical System** |  | 2014-12-14 | 2015-05-11 |  |  |  |  |  |  |  |  |
|  | 2 | **HVAC Works** |  | 2015-01-04 | 2015-05-11 |  |  |  |  |  |  |  |  |
|  | 1 | **1st Fix** |  | 2015-01-04 | 2015-01-17 |  |  |  |  |  |  |  |  |
| P5-MEP-AC-B2-1000 |  | Supports and Hungers Fixing | 12d | 2015-01-04 | 2015-01-17 | OFF-ENG-MEP-AC1130, OFF-PRO-MEP-DR1020, P5-ST-B1-1090 FS+30d | 312d | 0d | Cash Flow [17480 h]; Ductman [192 h]; Excavation [12] | 17,479.95 | MEP | AC | 1f |
|  | 3 | **2nd Fix** |  | 2015-01-18 | 2015-02-15 |  |  |  |  |  |  |  |  |
| P5-MEP-AC-B2-2000 |  | Fan's Installation | 25d | 2015-01-18 | 2015-02-15 | P5-MEP-AC-B2-1000, OFF-PRO-MEP-AC1470, P5-ST-B1-1090 FS+14d | 312d | 1d | Cash Flow [102656 h]; Ductman [134.4 h]; Excavation [25] | 102,656.42 | MEP | AC | 2f |
|  | 4 | **Final Fix** |  | 2015-04-30 | 2015-05-11 |  |  |  |  |  |  |  |  |
| P5-MEP-AC-B2-3000 |  | Grills and Diffusers Fixing | 10d | 2015-04-30 | 2015-05-11 | P5-MEP-AC-B2-2000, OFF-PRO-MEP-AC1140, P5-ST-B1-1090 FS+14d | 264d | 0d | Cash Flow [157320 h]; Ductman [320 h]; Excavation [10] | 157,319.53 | MEP | AC | ff |
|  | 1 | **Plumbing and Drainage Works** |  | 2014-12-14 | 2015-02-05 |  |  |  |  |  |  |  |  |
|  | 1 | **1st Fix** |  | 2014-12-14 | 2014-12-27 |  |  |  |  |  |  |  |  |
| P5-MEP-PL-B2-1000 |  | Supports installation for High level Pipes | 12d | 2014-12-14 | 2014-12-27 | OFF-ENG-MEP-DR1100, OFF-ENG-MEP-WS1090, OFF-PRO-MEP-DR1020, P5-ST-B1-1090 FS+14d | 319d | 0d | Cash Flow [819.68 h]; Plumber [16.35 h]; Excavation [12] | 819.68 | MEP | PL & D | 1f |
|  | 3 | **2nd Fix** |  | 2014-12-14 | 2015-01-29 |  |  |  |  |  |  |  |  |
| P5-MEP-PL-B2-2000 |  | Parking Drain Installation | 6d | 2014-12-14 | 2014-12-20 | OFF-ENG-MEP-DR1100, OFF-PRO-MEP-DR1050, P5-ST-B1-1090 FS+14d, OFF-PRO-MEP-DR1080 | 368d | 27d | Cash Flow [547.83 h]; Plumber [48 h]; Excavation [6] | 547.83 | MEP | PL & D | 2f |
| P5-MEP-PL-B2-2010 |  | High Level Drainage Pipes Installation | 21d | 2014-12-28 | 2015-01-22 | P5-MEP-PL-B2-1000, OFF-PRO-MEP-DR1050, P5-ST-B1-1090 FS+14d | 326d | 0d | Cash Flow [6562.53 h]; Plumber [244.38 h]; Excavation [21] | 6,562.53 | MEP | PL & D | 2f |
| P5-MEP-PL-B2-2030 |  | High Level Water Supply Pipes and Fittings Installation | 21d | 2014-12-28 | 2015-01-22 | P5-MEP-PL-B2-1000, OFF-PRO-MEP-WS1020, OFF-PRO-MEP-WS1110, P5-ST-B1-1090 FS+14d | 319d | 0d | Cash Flow [1308.6 h]; Plumber [150.02 h]; Excavation [21] | 1,308.6 | MEP | PL & D | 2f |
| P5-MEP-PL-B2-2020 |  | Drainage Pipes Gravity Test | 6d | 2015-01-24 | 2015-01-29 | P5-MEP-PL-B2-2010, P5-MEP-PL-B2-2000, P5-ST-B1-1090 FS+14d | 341d | 0d | Cash Flow [820.24 h]; Plumber [48 h]; Excavation [6] | 820.24 | MEP | PL & D | 2f |
| P5-MEP-PL-B2-2040 |  | Water Supply Pipes Pressure Test | 6d | 2015-01-24 | 2015-01-29 | P5-MEP-PL-B2-2030, P5-ST-B1-1090 FS+14d | 334d | 36d | Cash Flow [145.74 h]; Plumber [48 h]; Excavation [6] | 145.74 | MEP | PL & D | 2f |
|  | 4 | **Final Fix** |  | 2015-01-31 | 2015-02-05 |  |  |  |  |  |  |  |  |
| P5-MEP-PL-B2-3000 |  | Manhole Covers Installation | 6d | 2015-01-31 | 2015-02-05 | P5-MEP-PL-B2-2020, P5-ST-B1-1090 FS+14d | 341d | 36d | Cash Flow [488.57 h]; Plumber [37.5 h]; Excavation [6] | 488.57 | MEP | PL & D | ff |
|  | 3 | **Fire Fighting Works** |  | 2014-12-14 | 2015-02-12 |  |  |  |  |  |  |  |  |
|  | 1 | **1st Fix** |  | 2014-12-14 | 2014-12-27 |  |  |  |  |  |  |  |  |
| P5-MEP-FF-B2-1000 |  | Supports and Hungers installation | 12d | 2014-12-14 | 2014-12-27 | OFF-ENG-MEP-FF1090, OFF-PRO-MEP-DR1020, P5-ST-B1-1090 FS+14d | 327d | 0d | Cash Flow [35.86 h]; Plumber [288 h]; Excavation [12] | 35.86 | MEP | FF | 1f |

| ID | WBS | Activity | Duration | Start | Finish | Predecessors | Total float | Free float | Resources | Cost | Responsibility | MEP Systems | Fix | MEP Steps |
| --- | --- | --- | --- | --- | --- | --- | --- | --- | --- | --- | --- | --- | --- | --- |
|  | 3 | **2nd Fix** |  | 2014-12-28 | 2015-01-29 |  |  |  |  |  |  |  |  |  |
| P5-MEP-FF-B2-2000 |  | Sprinkler Pipes and Fittings Installation | 21d | 2014-12-28 | 2015-01-22 | P5-MEP-FF-B2-1000, OFF-PRO-MEP-FF1070, P5-ST-B1-1090 FS+14d | 327d | 0d | Cash Flow [35356.3 h]; Plumber [672 h]; Excavation [21] | 35,356.33 | MEP | FF | 2f |  |
| P5-MEP-FF-B2-2010 |  | Sprinkler Pipes Pressure Test | 6d | 2015-01-24 | 2015-01-29 | P5-MEP-FF-B2-2000, P5-ST-B1-1090 FS+14d | 336d | 0d | Cash Flow [1964.24 h]; Plumber [96 h]; Excavation [6] | 1,964.24 | MEP | FF | 2f |  |
|  | 4 | **Final Fix** |  | 2015-01-31 | 2015-02-12 |  |  |  |  |  |  |  |  |  |
| P5-MEP-FF-B2-3000 |  | Sprinkler Head Installation | 12d | 2015-01-31 | 2015-02-12 | P5-MEP-FF-B2-2010, P5-ST-B1-1090 FS+14d | 336d | 30d | Plumber [576 h]; Cash Flow [4522.33 h]; Excavation [12] | 4,522.33 | MEP | FF | ff |  |
|  | 3 | **Electrical System** |  | 2014-12-14 | 2015-04-04 |  |  |  |  |  |  |  |  |  |
|  | 1 | **1st Fix** |  | 2014-12-14 | 2015-01-05 |  |  |  |  |  |  |  |  |  |
| P5-MEP-EL-B2-1010 |  | PVC Back Boxes and Conduits Fixing in Wall | 12d | 2014-12-14 | 2014-12-27 | ENGMEP8620, ENGMEP8810, ENGMEP9030, ENGMEP9190, ENGMEP9470, ENGMEP9610, PROCMEPELE1990, PROCMEPELE2080, P5-ST-B1-1090 FS+14d | 316d | 0d | Cash Flow [3307.67 h]; Electrician [384 h]; Excavation [12] | 3,307.67 | MEP | EL | 1f | 1st Fix |
| P5-MEP-EL-B2-1000 |  | DB's Inclosure Fixing | 6d | 2014-12-28 | 2015-01-05 | ENGMEP8620, ENGMEP8810, P5-ST-B1-1090 FS+14d, P5-MEP-EL-B2-1010 | 316d | 0d | Cash Flow [2130.4 h]; Electrician [96 h]; Excavation [6] | 2,130.4 | MEP | EL | 1f | 1st Fix |
|  | 2 | **2nd Fix** |  | 2014-12-14 | 2015-02-04 |  |  |  |  |  |  |  |  |  |
| P5-MEP-EL-B2-2020 |  | Cable Tray and Trunking Installation | 21d | 2014-12-14 | 2015-01-08 | PROCMEPELE3340, P5-ST-B1-1090 FS+14d | 318d | 9d | Cash Flow [9064.45 h]; Electrician [504 h]; Excavation [21] | 9,064.45 | MEP | EL | 2f | 2nd Fix |
| P5-MEP-EL-B2-2010 |  | SMDB's Installation | 6d | 2014-12-28 | 2015-01-05 | P5-MEP-EL-B2-1010, P5-ST-B1-1090 FS+14d, PROCMEPELE9380 | 344d | 26d | Cash Flow [4970.93 h]; Electrician [48 h]; Excavation [6] | 4,970.93 | MEP | EL | 2f | 2nd Fix |
| P5-MEP-EL-B2-2030 |  | Fire Alarm System Wiring | 12d | 2014-12-28 | 2015-01-12 | PROCMEPELE8650, P5-MEP-EL-B2-1010, P5-ST-B1-1090 FS+14d | 343d | 0d | Cash Flow [7111.01 h]; Electrician [192 h]; Excavation [12] | 7,111.01 | MEP | EL | 2f | 2nd Fix |
| P5-MEP-EL-B2-2040 |  | Lighting Wiring | 12d | 2014-12-28 | 2015-01-12 | PROCMEPELE5680, P5-MEP-EL-B2-1010, P5-ST-B1-1090 FS+14d | 322d | 6d | Cash Flow [3566.08 h]; Electrician [241.71 h]; Excavation [12] | 3,566.08 | MEP | EL | 2f | 2nd Fix |
| P5-MEP-EL-B2-2050 |  | Power Points Wiring | 12d | 2014-12-28 | 2015-01-12 | PROCMEPELE5680, P5-MEP-EL-B2-1010, P5-ST-B1-1090 FS+14d | 322d | 6d | Cash Flow [2894.21 h]; Electrician [192 h]; Excavation [12] | 2,894.21 | MEP | EL | 2f | 2nd Fix |
| P5-MEP-EL-B2-2060 |  | BMS System Wiring | 8d | 2014-12-28 | 2015-01-07 | PROCMEPELE9100, P5-MEP-EL-B2-1010, P5-ST-B1-1090 FS+14d | 346d | 24d | Cash Flow [15183.4 h]; Electrician [186 h]; Excavation [8] | 15,183.44 | MEP | EL | 2f | 2nd Fix |
| P5-MEP-EL-B2-2070 |  | Emergency Light Wiring | 8d | 2014-12-28 | 2015-01-07 | PROCMEPELE9330, P5-MEP-EL-B2-1010, P5-ST-B1-1090 FS+14d | 363d | 34d | Cash Flow [1202.03 h]; Electrician [128 h]; Excavation [8] | 1,202.03 | MEP | EL | 2f | 2nd Fix |
| P5-MEP-EL-B2-2000 |  | DB's Installation and Termination | 12d | 2015-01-06 | 2015-01-19 | P5-MEP-EL-B2-1000, P5-ST-B1-1090 FS+14d, PROCMEPELE8920 | 316d | 0d | Cash Flow [4970.93 h]; Electrician [288 h]; Excavation [12] | 4,970.93 | MEP | EL | 2f | 2nd Fix |
| P5-MEP-EL-B2-3040 |  | Power Cable Puling | 14d | 2015-01-20 | 2015-02-04 | P5-MEP-EL-B2-2020, P5-MEP-EL-B2-2040, P5-MEP-EL-B2-2050, P5-ST-B1-1090 FS+14d, P5-MEP-EL-B2-2000 | 316d | 0d | Cash Flow [13632.3 h]; Electrician [168 h]; Excavation [14] | 13,632.33 | MEP | EL | 2f | 2nd Fix |
|  | 3 | **Final Fix** |  | 2015-01-13 | 2015-04-04 |  |  |  |  |  |  |  |  |  |
| P5-MEP-EL-B2-3010 |  | Fire Alarm System Detector Installation | 12d | 2015-01-13 | 2015-01-26 | P5-MEP-EL-B2-2030, P5-ST-B1-1090 FS+14d | 343d | 30d | Cash Flow [4034.38 h]; Electrician [192 h]; Excavation [12] | 4,034.38 | MEP | EL | ff | Final F |
| P5-MEP-EL-B2-3030 |  | SMDB's Termination and Final Connection | 6d | 2015-02-05 | 2015-02-11 | P5-MEP-EL-B2-2010, P5-MEP-EL-B2-2050, P5-ST-B1-1090 FS+14d, P5-MEP-EL-B2-2060, P5-MEP-EL-B2-3040 | 322d | 0d | Cash Flow [2785.83 h]; Electrician [192 h]; Excavation [6] | 2,785.82 | MEP | EL | ff | Final F |
| P5-MEP-EL-B2-3020 |  | Lights Fitting Fixing | 14d | 2015-02-12 | 2015-02-28 | PROCMEPELE8560, P5-MEP-EL-B2-2040, P5-ST-B1-1090 FS+14d, P5-MEP-EL-B2-3030 | 322d | 34d | Cash Flow [7322.66 h]; Electrician [244 h]; Excavation [14] | 7,322.66 | MEP | EL | ff | Final F |
| P5-MEP-EL-B2-3050 |  | Sockets and Switches Fixing | 8d | 2015-03-26 | 2015-04-04 | PROCMEPELE8830, P5-MEP-EL-B2-2050, P5-ST-B1-1090 FS+14d | 297d | 0d | Cash Flow [1166.96 h]; Electrician [128 h]; Excavation [8] | 1,166.96 | MEP | EL | ff | Final F |
| P5-MEP-EL-B2-3060 |  | Emergency Light Fixing | 8d | 2015-03-26 | 2015-04-04 | P5-MEP-EL-B2-3050 SS, P5-MEP-EL-B2-2070, P5-ST-B1-1090 FS+14d, P5-MEP-EL-B2-3010 | 297d | 0d | Cash Flow [5714.02 h]; Electrician [128 h]; Excavation [8] | 5,714.02 | MEP | EL | ff | Final F |
| P5-MEP-EL-B2-3000 |  | CO2 System Installation | 6d | 2015-03-29 | 2015-04-04 | P5-ST-B1-1090 FS+14d, P5-MEP-EL-B2-3060 FF | 304d | 2d | Cash Flow [21027.8 h]; Electrician [179.65 h]; Excavation [6] | 21,027.76 | MEP | EL | ff | Final F |

| ID | WBS | Activity | Duration | Start | Finish | Predecessors | Total float | Free float | Resources | Cost | Structural | Responsibility | MEP Systems | MEP Steps | Fix |
| --- | --- | --- | --- | --- | --- | --- | --- | --- | --- | --- | --- | --- | --- | --- | --- |
|  | 2 | **Basement 1** |  | 2014-10-01 | 2015-05-23 |  |  |  |  |  |  |  |  |  |  |
|  | 1 | **Structural** |  | 2014-10-01 | 2014-11-26 |  |  |  |  |  |  |  |  |  |  |
| P5-ST-B1-1010 |  | Reinforcement for Verticals | 12d | 2014-10-01 | 2014-10-19 | P5-ST-B2-1060 | 112d | 0d | MNHRS [894.2 h]; Cash Flow [110176 h]; Reinforcement [47381.3]; Excavation [12] | 110,175.68 | STR |  |  |  |  |
| P5-ST-B1-1020 |  | MEP Works in Vertical Element | 5d | 2014-10-14 | 2014-10-19 | ENGMEP8620, P5-ST-B1-1010 FF | 120d | 8d | Cash Flow [1798.55 h]; Electrician [160 h]; Excavation [5] | 1,798.55 |  | MEP | EL | B.W |  |
| P5-ST-B1-1030 |  | FW for Verticals | 8d | 2014-10-20 | 2014-10-29 | P5-ST-B1-1010 | 112d | 0d | MNHRS [17712 h]; Cash Flow [143709 h]; FW [2500.6]; Excavation [8] | 143,708.65 | STR |  |  |  |  |
| P5-ST-B1-1040 |  | Concrete Verticals | 1d | 2014-10-30 | 2014-10-30 | P5-ST-B1-1030, P5-ST-B1-1020 | 112d | 0d | MNHRS [3190.81 h]; Cash Flow [45189.6 h]; Concrete [385.5]; Excavation [1] | 45,189.6 | STR |  |  |  |  |
| P5-ST-B1-1050 |  | FW for Slab | 10d | 2014-11-02 | 2014-11-13 | P5-ST-B1-1040 | 112d | 0d | MNHRS [21904.2 h]; Cash Flow [177721 h]; FW [3092.5]; Excavation [10] | 177,721.39 | STR |  |  |  |  |
| P5-ST-B1-1070 |  | Reinforcement for Slab | 10d | 2014-11-15 | 2014-11-25 | P5-ST-B1-1050 | 112d | 0d | MNHRS [2721.8 h]; Cash Flow [335840 h]; Reinforcement [144428]; Excavation [10] | 335,840.19 | STR |  |  |  |  |
| P5-ST-B1-1080 |  | MEP Works in Slab & Beams | 5d | 2014-11-20 | 2014-11-25 | P5-ST-B1-1070 FF, ENGMEP8620 | 112d | 0d | Cash Flow [6698 h]; Electrician [640 h]; Excavation [5] | 6,698 |  | MEP | EL | B.W |  |
| P5-ST-B1-1090 |  | Concrete for Slab | 1d | 2014-11-26 | 2014-11-26 | P5-ST-B1-1070, P5-ST-B1-1080 | 112d | 0d | MNHRS [7087.21 h]; Cash Flow [218115 h]; Concrete [856.25]; Excavation [1] | 218,114.99 | STR |  |  |  |  |
|  | 2 | **Fiishing** |  |  |  |  |  |  |  |  |  |  |  |  |  |
|  | 3 | **MEP Work** |  | 2015-02-03 | 2015-05-23 |  |  |  |  |  |  |  |  |  |  |
|  | 1 | **Mechanical System** |  | 2015-02-03 | 2015-05-23 |  |  |  |  |  |  |  |  |  |  |
|  | 2 | **HVAC Works** |  | 2015-02-03 | 2015-05-23 |  |  |  |  |  |  |  |  |  |  |
|  | 1 | **1st Fix** |  | 2015-02-03 | 2015-02-16 |  |  |  |  |  |  |  |  |  |  |
| P5-MEP-AC-B1-1000 |  | Supports and Hungers Fixing | 12d | 2015-02-03 | 2015-02-16 | OFF-ENG-MEP-AC1140, P5-MEP-AC-B2-1000, P5-ST-GF-1060 FS+14d | 311d | 0d | Cash Flow [17480 h]; Ductman [192 h]; Excavation [12] | 17,479.95 |  | MEP | AC |  | 1f |
|  | 3 | **2nd Fix** |  | 2015-02-17 | 2015-03-17 |  |  |  |  |  |  |  |  |  |  |
| P5-MEP-AC-B1-2000 |  | Fan's Installation | 25d | 2015-02-17 | 2015-03-17 | P5-MEP-AC-B1-1000, P5-ST-GF-1060 FS+14d, P5-MEP-AC-B2-2000 | 311d | 47d | Cash Flow [102656 h]; Ductman [134.4 h]; Excavation [25] | 102,656.42 |  | MEP | AC |  | 2f |
|  | 4 | **Final Fix** |  | 2015-05-12 | 2015-05-23 |  |  |  |  |  |  |  |  |  |  |
| P5-MEP-AC-B1-3000 |  | Grills and Diffusers Fixing | 10d | 2015-05-12 | 2015-05-23 | P5-MEP-AC-B1-2000, P5-MEP-AC-B2-3000, P5-ST-GF-1060 FS+14d | 264d | 183d | Cash Flow [157320 h]; Ductman [320 h]; Excavation [10] | 157,319.53 |  | MEP | AC |  | ff |
|  | 1 | **Plumbing and Drainage Works** |  | 2015-02-03 | 2015-03-26 |  |  |  |  |  |  |  |  |  |  |
|  | 1 | **1st Fix** |  | 2015-02-03 | 2015-02-16 |  |  |  |  |  |  |  |  |  |  |
| P5-MEP-PL-B1-1000 |  | Supports installation for High level Pipes | 12d | 2015-02-03 | 2015-02-16 | OFF-ENG-MEP-DR1110, OFF-ENG-MEP-WS1100, P5-MEP-PL-B2-1000, P5-ST-GF-1060 FS+14d | 298d | 0d | Cash Flow [819.68 h]; Plumber [16.35 h]; Excavation [12] | 819.68 |  | MEP | PL & D |  | 1f |
|  | 3 | **2nd Fix** |  | 2015-02-03 | 2015-03-19 |  |  |  |  |  |  |  |  |  |  |
| P5-MEP-PL-B1-2000 |  | Parking Drain Installation | 6d | 2015-02-03 | 2015-02-09 | OFF-ENG-MEP-DR1110, P5-MEP-PL-B2-2000, P5-ST-GF-1060 FS+14d | 332d | 27d | Cash Flow [547.83 h]; Plumber [48 h]; Excavation [6] | 547.83 |  | MEP | PL & D |  | 2f |
| P5-MEP-PL-B1-2010 |  | High Level Drainage Pipes Installation | 21d | 2015-02-17 | 2015-03-12 | P5-MEP-PL-B1-1000, P5-MEP-PL-B2-2010, P5-ST-GF-1060 FS+14d | 305d | 0d | Cash Flow [6562.53 h]; Plumber [244.38 h]; Excavation [21] | 6,562.53 |  | MEP | PL & D |  | 2f |
| P5-MEP-PL-B1-2030 |  | High Level Water Supply Pipes and Fittings Installation | 21d | 2015-02-17 | 2015-03-12 | P5-MEP-PL-B1-1000, P5-MEP-PL-B2-2030, P5-ST-GF-1060 FS+14d | 298d | 0d | Cash Flow [1308.6 h]; Plumber [150.02 h]; Excavation [21] | 1,308.6 |  | MEP | PL & D |  | 2f |
| P5-MEP-PL-B1-2020 |  | Drainage Pipes Gravity Test | 6d | 2015-03-14 | 2015-03-19 | P5-MEP-PL-B1-2010, P5-MEP-PL-B1-2000, P5-ST-GF-1060 FS+14d, P5-MEP-PL-B2-2020 | 305d | 0d | Cash Flow [820.24 h]; Plumber [48 h]; Excavation [6] | 820.24 |  | MEP | PL & D |  | 2f |
| P5-MEP-PL-B1-2040 |  | Water Supply Pipes Pressure Test | 6d | 2015-03-14 | 2015-03-19 | P5-MEP-PL-B1-2030, P5-ST-GF-1060 FS+14d, P5-MEP-PL-B2-2040 | 298d | 238d | Cash Flow [145.74 h]; Plumber [48 h]; Excavation [6] | 145.74 |  | MEP | PL & D |  | 2f |

| ID | WBS | Activity | Duration | Start | Finish | Predecessors | Total float | Free float | Resources | Cost | Responsibility | MEP Systems | Fix | MEP Steps |
| --- | --- | --- | --- | --- | --- | --- | --- | --- | --- | --- | --- | --- | --- | --- |
|  | 4 | **Final Fix** |  | 2015-03-21 | 2015-03-26 |  |  |  |  |  |  |  |  |  |
| P5-MEP-PL-B1-3000 |  | Manhole Covers Installation | 6d | 2015-03-21 | 2015-03-26 | P5-MEP-PL-B2-3000, P5-MEP-PL-B1-2020, P5-ST-GF-1060 FS+14d | 305d | 232d | Cash Flow [488.57 h]; Plumber [37.5 h]; Excavation [6] | 488.57 | MEP | PL & D | ff |  |
|  | 3 | **Fire Fighting Works** |  | 2015-02-03 | 2015-04-02 |  |  |  |  |  |  |  |  |  |
|  | 1 | **1st Fix** |  | 2015-02-03 | 2015-02-16 |  |  |  |  |  |  |  |  |  |
| P5-MEP-FF-B1-1000 |  | Supports and Hungers installation | 12d | 2015-02-03 | 2015-02-16 | OFF-ENG-MEP-FF1100, P5-MEP-FF-B2-1000, P5-ST-GF-1060 FS+14d | 306d | 0d | Cash Flow [35.86 h]; Plumber [288 h]; Excavation [12] | 35.86 | MEP | FF | 1f |  |
|  | 3 | **2nd Fix** |  | 2015-02-17 | 2015-03-19 |  |  |  |  |  |  |  |  |  |
| P5-MEP-FF-B1-2000 |  | Sprinkler Pipes and Fittings Installation | 21d | 2015-02-17 | 2015-03-12 | P5-MEP-FF-B1-1000, P5-MEP-FF-B2-2000, P5-ST-GF-1060 FS+14d | 306d | 0d | Cash Flow [35356.3 h]; Plumber [672 h]; Excavation [21] | 35,356.33 | MEP | FF | 2f |  |
| P5-MEP-FF-B1-2010 |  | Sprinkler Pipes Pressure Test | 6d | 2015-03-14 | 2015-03-19 | P5-MEP-FF-B1-2000, P5-ST-GF-1060 FS+14d | 306d | 0d | Cash Flow [1964.24 h]; Plumber [96 h]; Excavation [6] | 1,964.24 | MEP | FF | 2f |  |
|  | 4 | **Final Fix** |  | 2015-03-21 | 2015-04-02 |  |  |  |  |  |  |  |  |  |
| P5-MEP-FF-B1-3000 |  | Sprinkler Head Installation | 12d | 2015-03-21 | 2015-04-02 | P5-MEP-FF-B1-2010, P5-MEP-FF-B2-3000, P5-ST-GF-1060 FS+14d | 306d | 226d | Plumber [576 h]; Cash Flow [4522.33 h]; Excavation [12] | 4,522.33 | MEP | FF | ff |  |
|  | 3 | **Electrical System** |  | 2015-02-03 | 2015-04-25 |  |  |  |  |  |  |  |  |  |
|  | 1 | **1st Fix** |  | 2015-02-03 | 2015-02-23 |  |  |  |  |  |  |  |  |  |
| P5-MEP-EL-B1-1010 |  | PVC Back Boxes and Conduits Fixing in Wall | 12d | 2015-02-03 | 2015-02-16 | ENGMEP9620, ENGMEP9480, ENGMEP9200, ENGMEP9040, ENGMEP8820, ENGMEP8620, PROCMEPELE1990, PROCMEPELE2080, P5-ST-GF-1060 FS+14d, P5-MEP-EL-B2-1010 | 288d | 0d | Cash Flow [3307.67 h]; Electrician [384 h]; Excavation [12] | 3,307.67 | MEP | EL | 1f | 1st Fix |
| P5-MEP-EL-B1-1000 |  | DB's Inclosure Fixing | 6d | 2015-02-17 | 2015-02-23 | ENGMEP8820, ENGMEP8620, P5-ST-GF-1060 FS+14d, P5-MEP-EL-B2-1000, P5-MEP-EL-B1-1010 | 288d | 0d | Cash Flow [2130.4 h]; Electrician [96 h]; Excavation [6] | 2,130.4 | MEP | EL | 1f | 1st Fix |
|  | 2 | **2nd Fix** |  | 2015-02-03 | 2015-03-25 |  |  |  |  |  |  |  |  |  |
| P5-MEP-EL-B1-2020 |  | Cable Tray and Trunking Installation | 21d | 2015-02-03 | 2015-02-26 | PROCMEPELE3340, P5-ST-GF-1060 FS+14d, P5-MEP-EL-B2-2020 | 297d | 9d | Cash Flow [9064.45 h]; Electrician [504 h]; Excavation [21] | 9,064.45 | MEP | EL | 2f | 2nd Fix |
| P5-MEP-EL-B1-2010 |  | SMDB's , MDB's Installation | 12d | 2015-02-17 | 2015-03-02 | P5-MEP-EL-B1-1010, P5-ST-GF-1060 FS+14d, P5-MEP-EL-B2-2010 | 308d | 20d | Cash Flow [4196.6 h]; Electrician [336 h]; Excavation [12] | 4,196.6 | MEP | EL | 2f | 2nd Fix |
| P5-MEP-EL-B1-2030 |  | Fire Alarm System Wiring | 12d | 2015-02-17 | 2015-03-02 | PROCMEPELE8650, P5-MEP-EL-B1-1010, P5-ST-GF-1060 FS+14d, P5-MEP-EL-B2-2030 | 313d | 0d | Cash Flow [7111.01 h]; Electrician [192 h]; Excavation [12] | 7,111.01 | MEP | EL | 2f | 2nd Fix |
| P5-MEP-EL-B1-2040 |  | Lighting Wiring | 12d | 2015-02-17 | 2015-03-02 | PROCMEPELE5680, P5-MEP-EL-B1-1010, P5-ST-GF-1060 FS+14d, P5-MEP-EL-B2-2040 | 294d | 6d | Cash Flow [3566.08 h]; Electrician [241.71 h]; Excavation [12] | 3,566.08 | MEP | EL | 2f | 2nd Fix |
| P5-MEP-EL-B1-2050 |  | Power Points Wiring | 12d | 2015-02-17 | 2015-03-02 | PROCMEPELE5680, P5-MEP-EL-B1-1010, P5-ST-GF-1060 FS+14d, P5-MEP-EL-B2-2050 | 294d | 6d | Cash Flow [2894.21 h]; Electrician [192 h]; Excavation [12] | 2,894.21 | MEP | EL | 2f | 2nd Fix |
| P5-MEP-EL-B1-2070 |  | Emergency Light Wiring | 8d | 2015-02-17 | 2015-02-25 | PROCMEPELE9330, P5-MEP-EL-B1-1010, P5-ST-GF-1060 FS+14d, P5-MEP-EL-B2-2070 | 329d | 32d | Cash Flow [1202.03 h]; Electrician [128 h]; Excavation [8] | 1,202.03 | MEP | EL | 2f | 2nd Fix |
| P5-MEP-EL-B1-2000 |  | DB's Installation and Termination | 12d | 2015-02-24 | 2015-03-09 | P5-MEP-EL-B1-1000, P5-ST-GF-1060 FS+20d, P5-MEP-EL-B2-2000 | 288d | 0d | Cash Flow [4970.93 h]; Electrician [288 h]; Excavation [12] | 4,970.93 | MEP | EL | 2f | 2nd Fix |
| P5-MEP-EL-B1-2060 |  | BMS System Wiring | 8d | 2015-03-10 | 2015-03-18 | PROCMEPELE9100, P5-MEP-EL-B1-1010, P5-ST-GF-1060 FS+14d, P5-MEP-EL-B1-2000, P5-MEP-EL-B2-2060 | 306d | 18d | Cash Flow [15183.4 h]; Electrician [186 h]; Excavation [8] | 15,183.44 | MEP | EL | 2f | 2nd Fix |
| P5-MEP-EL-B1-3040 |  | Power Cable Puling | 14d | 2015-03-10 | 2015-03-25 | P5-MEP-EL-B1-2020, P5-MEP-EL-B1-2040, P5-MEP-EL-B1-2050, P5-ST-GF-1060 FS+14d, P5-MEP-EL-B1-2000, P5-MEP-EL-B2-3040 | 288d | 0d | Cash Flow [13632.3 h]; Electrician [168 h]; Excavation [14] | 13,632.33 | MEP | EL | 2f | 2nd Fix |

| ID | WBS | Activity | Duration | Start | Finish | Predecessors | Total float | Free float | Resources | Cost | Responsibility | MEP Systems | MEP Steps | Fix | Structural |
| --- | --- | --- | --- | --- | --- | --- | --- | --- | --- | --- | --- | --- | --- | --- | --- |
|  | 3 | **Final Fix** |  | 2015-03-03 | 2015-04-25 |  |  |  |  |  |  |  |  |  |  |
| P5-MEP-EL-B1-3010 |  | Fire Alarm System Detector Installation | 12d | 2015-03-03 | 2015-03-16 | P5-MEP-EL-B1-2030, P5-ST-GF-1060 FS+14d, P5-MEP-EL-B2-3010 | 313d | 16d | Cash Flow [4034.38 h]; Electrician [192 h]; Excavation [12] | 4,034.38 | MEP | EL | Final F | ff |  |
| P5-MEP-EL-B1-3030 |  | SMDB's , MDB's Termination and Final Connection | 12d | 2015-03-26 | 2015-04-08 | P5-MEP-EL-B1-2010, P5-MEP-EL-B1-2050, P5-ST-GF-1060 FS+14d, P5-MEP-EL-B1-3040, P5-MEP-EL-B2-3030 | 288d | 0d | Cash Flow [20725.6 h]; Electrician [384 h]; Excavation [12] | 20,725.64 | MEP | EL | Final F | ff |  |
| P5-MEP-EL-B1-3050 |  | Sockets and Switches Fixing | 8d | 2015-04-05 | 2015-04-13 | PROCMEPELE8830, P5-MEP-EL-B1-2050, P5-ST-GF-1060 FS+14d, P5-MEP-EL-B2-3050 | 297d | 0d | Cash Flow [1166.96 h]; Electrician [128 h]; Excavation [8] | 1,166.96 | MEP | EL | Final F | ff |  |
| P5-MEP-EL-B1-3060 |  | Emergency Light Fixing | 8d | 2015-04-05 | 2015-04-13 | P5-MEP-EL-B1-3050 SS, P5-MEP-EL-B1-2070, P5-ST-GF-1060 FS+14d, P5-MEP-EL-B1-3010, P5-MEP-EL-B2-3060 | 297d | 0d | Cash Flow [5714.02 h]; Electrician [128 h]; Excavation [8] | 5,714.02 | MEP | EL | Final F | ff |  |
| P5-MEP-EL-B1-3000 |  | CO2 System Installation | 6d | 2015-04-07 | 2015-04-13 | P5-ST-GF-1060 FS+14d, P5-MEP-EL-B1-3060 FF, P5-MEP-EL-B2-3000 | 302d | 217d | Cash Flow [21027.8 h]; Electrician [179.65 h]; Excavation [6] | 21,027.76 | MEP | EL | Final F | ff |  |
| P5-MEP-EL-B1-3020 |  | Lights Fitting Fixing | 14d | 2015-04-09 | 2015-04-25 | PROCMEPELE8560, P5-MEP-EL-B1-2040, P5-ST-GF-1060 FS+14d, P5-MEP-EL-B1-2060, P5-MEP-EL-B1-3030, P5-MEP-EL-B2-3020 | 288d | 250d | Cash Flow [7322.66 h]; Electrician [244 h]; Excavation [14] | 7,322.66 | MEP | EL | Final F | ff |  |
|  | 4 | **Ground Floor** |  | 2014-11-27 | 2015-01-17 |  |  |  |  |  |  |  |  |  |  |
|  | 1 | **Structural** |  | 2014-11-27 | 2015-01-17 |  |  |  |  |  |  |  |  |  |  |
| P5-ST-GF-1000 |  | Reinforcement for Verticals | 12d | 2014-11-27 | 2014-12-10 | P5-ST-B1-1090 | 288d | 0d | MNHRS [894.2 h]; Cash Flow [110176 h]; Reinforcement [47381.3]; Excavation [12] | 110,175.68 |  |  |  |  | STR |
| P5-ST-GF-1010 |  | FW for Verticals | 8d | 2014-12-11 | 2014-12-20 | P5-ST-GF-1000 | 288d | 0d | MNHRS [17712 h]; Cash Flow [143709 h]; FW [2500.6]; Excavation [8] | 143,708.65 |  |  |  |  | STR |
| P5-ST-GF-1020 |  | Concrete Verticals | 1d | 2014-12-21 | 2014-12-21 | P5-ST-GF-1010 | 288d | 0d | MNHRS [3190.81 h]; Cash Flow [45189.6 h]; Concrete [385.5]; Excavation [1] | 45,189.6 |  |  |  |  | STR |
| P5-ST-GF-1030 |  | FW for Slab | 10d | 2014-12-22 | 2015-01-04 | P5-ST-GF-1020 | 288d | 0d | MNHRS [21904.2 h]; Cash Flow [177721 h]; FW [3092.5]; Excavation [10] | 177,721.39 |  |  |  |  | STR |
| P5-ST-GF-1050 |  | Reinforcement for Slab | 10d | 2015-01-05 | 2015-01-15 | P5-ST-GF-1030 | 288d | 0d | MNHRS [2721.8 h]; Cash Flow [335840 h]; Reinforcement [144428]; Excavation [10] | 335,840.19 |  |  |  |  | STR |
| P5-ST-GF-1060 |  | Concrete for Slab | 1d | 2015-01-17 | 2015-01-17 | P5-ST-GF-1050 | 288d | 0d | MNHRS [7087.21 h]; Cash Flow [218115 h]; Concrete [856.25]; Excavation [1] | 218,114.99 |  |  |  |  | STR |
|  | 2 | **Fiishing** |  |  |  |  |  |  |  |  |  |  |  |  |  |
|  | 3 | **Part 6** |  | 2014-11-27 | 2015-09-22 |  |  |  |  |  |  |  |  |  |  |
|  | 1 | **Basement 2** |  | 2014-11-27 | 2015-07-06 |  |  |  |  |  |  |  |  |  |  |
|  | 1 | **Structural** |  | 2014-11-27 | 2015-01-21 |  |  |  |  |  |  |  |  |  |  |
| P6-ST-B2-1000 |  | Blinding | 5d | 2014-11-27 | 2014-12-02 | P5-ST-B1-1090 | 112d | 0d | Excavation [5] |  |  |  |  |  | STR |
| P6-ST-B2-1010 |  | Waterproofing | 10d | 2014-12-03 | 2014-12-14 | P6-ST-B2-1000 | 112d | 0d | MNHRS [182.77 h]; Waterproofing [449]; Excavation [10] |  |  |  |  |  | STR |
| P6-ST-B2-1020 |  | Formwork | 10d | 2014-12-15 | 2014-12-25 | P6-ST-B2-1000, P6-ST-B2-1010 | 112d | 0d | MNHRS [21658.1 h]; Cash Flow [175724 h]; FW [3057.7]; Excavation [10] | 175,724.37 |  |  |  |  | STR |
| P6-ST-B2-1030 |  | Reinforcement | 20d | 2014-12-27 | 2015-01-20 | P6-ST-B2-1020 | 112d | 0d | MNHRS [2768.75 h]; Cash Flow [341628 h]; Reinforcement [146917]; Excavation [20] | 341,628.38 |  |  |  |  | STR |
| P6-ST-B2-1040 |  | MEP Works in Raft | 5d | 2015-01-15 | 2015-01-20 | ENGMEP8700, P6-ST-B2-1030 FF | 112d | 0d | Cash Flow [13051 h]; Plumber [312 h]; Excavation [5] | 13,051 | MEP | PL & D | B.W |  |  |
| P6-ST-B2-1050 |  | Earthing Works | 5d | 2015-01-15 | 2015-01-20 | P6-ST-B2-1040 SS, ENGMEP8700, ENGMEP8910, PROCMEPELE1810, P6-ST-B2-1030 FF | 112d | 0d | Cash Flow [8362.29 h]; Electrician [408 h]; Excavation [5] | 8,362.29 | MEP | EL | B.W |  |  |
| P6-ST-B2-1060 |  | Concrete | 1d | 2015-01-21 | 2015-01-21 | P6-ST-B2-1030, P6-ST-B2-1040, P6-ST-B2-1050 | 112d | 0d | MNHRS [14424.9 h]; Cash Flow [443936 h]; Concrete [1742.75]; Excavation [1] | 443,935.63 |  |  |  |  | STR |

| ID | WBS | Activity | Duration | Start | Finish | Predecessors | Total float | Free float | Resources | Cost | Responsibility | MEP Systems | Fix |
| --- | --- | --- | --- | --- | --- | --- | --- | --- | --- | --- | --- | --- | --- |
|  | 2 | **Fiishing** |  |  |  |  |  |  |  |  |  |  |  |
|  | 4 | **MEP Works** |  | 2015-03-29 | 2015-07-06 |  |  |  |  |  |  |  |  |
|  | 1 | **Mechanical System** |  | 2015-03-29 | 2015-05-26 |  |  |  |  |  |  |  |  |
|  | 2 | **HVAC Works** |  | 2015-03-29 | 2015-05-11 |  |  |  |  |  |  |  |  |
|  | 1 | **1st Fix** |  | 2015-03-29 | 2015-04-11 |  |  |  |  |  |  |  |  |
| P6-MEP-AC-B2-1000 |  | Supports and Hungers Fixing | 12d | 2015-03-29 | 2015-04-11 | OFF-ENG-MEP-AC1130, OFF-PRO-MEP-DR1020, P6-ST-B1-1080 FS+14d | 260d | 0d | Cash Flow [17480 h]; Ductman [192 h]; Excavation [12] | 17,479.95 | MEP | AC | 1f |
|  | 3 | **2nd Fix** |  | 2015-04-12 | 2015-04-28 |  |  |  |  |  |  |  |  |
| P6-MEP-AC-B2-2000 |  | Fan's Installation | 15d | 2015-04-12 | 2015-04-28 | P6-MEP-AC-B2-1000, OFF-PRO-MEP-AC1470, P6-ST-B1-1080 FS+14d | 260d | 1d | Cash Flow [102656 h]; Ductman [134.4 h]; Excavation [15] | 102,656.42 | MEP | AC | 2f |
|  | 4 | **Final Fix** |  | 2015-04-30 | 2015-05-11 |  |  |  |  |  |  |  |  |
| P6-MEP-AC-B2-3000 |  | Grills and Diffusers Fixing | 10d | 2015-04-30 | 2015-05-11 | P6-MEP-AC-B2-2000, OFF-PRO-MEP-AC1140, P6-ST-B1-1080 FS+14d | 264d | 31d | Cash Flow [157320 h]; Ductman [320 h]; Excavation [10] | 157,319.53 | MEP | AC | ff |
|  | 1 | **Plumbing and Drainage Works** |  | 2015-03-29 | 2015-05-19 |  |  |  |  |  |  |  |  |
|  | 1 | **1st Fix** |  | 2015-03-29 | 2015-04-11 |  |  |  |  |  |  |  |  |
| P6-MEP-PL-B2-1000 |  | Supports installation for High level Pipes | 12d | 2015-03-29 | 2015-04-11 | OFF-ENG-MEP-DR1100, OFF-ENG-MEP-WS1090, OFF-PRO-MEP-DR1020, P6-ST-B1-1080 FS+14d | 231d | 0d | Cash Flow [819.68 h]; Plumber [16.35 h]; Excavation [12] | 819.68 | MEP | PL & D | 1f |
|  | 3 | **2nd Fix** |  | 2015-03-29 | 2015-05-12 |  |  |  |  |  |  |  |  |
| P6-MEP-PL-B2-2000 |  | Parking Drain Installation | 6d | 2015-03-29 | 2015-04-04 | OFF-ENG-MEP-DR1100, OFF-PRO-MEP-DR1050, P6-ST-B1-1080 FS+14d, P6-ST-B1-1080 FF+14d, OFF-PRO-MEP-DR1080 | 280d | 27d | Cash Flow [547.83 h]; Plumber [48 h]; Excavation [6] | 547.83 | MEP | PL & D | 2f |
| P6-MEP-PL-B2-2010 |  | High Level Drainage Pipes Installation | 21d | 2015-04-12 | 2015-05-05 | P6-MEP-PL-B2-1000, OFF-PRO-MEP-DR1050, P6-ST-B1-1080 FS+14d | 238d | 0d | Cash Flow [6562.53 h]; Plumber [244.38 h]; Excavation [21] | 6,562.53 | MEP | PL & D | 2f |
| P6-MEP-PL-B2-2030 |  | High Level Water Supply Pipes and Fittings Installation | 21d | 2015-04-12 | 2015-05-05 | P6-MEP-PL-B2-1000, OFF-PRO-MEP-WS1020, OFF-PRO-MEP-WS1110, P6-ST-B1-1080 FS+14d | 231d | 0d | Cash Flow [1308.6 h]; Plumber [150.02 h]; Excavation [21] | 1,308.6 | MEP | PL & D | 2f |
| P6-MEP-PL-B2-2020 |  | Drainage Pipes Gravity Test | 6d | 2015-05-06 | 2015-05-12 | P6-MEP-PL-B2-2010, P6-MEP-PL-B2-2000, P6-ST-B1-1080 FS+14d | 253d | 0d | Cash Flow [820.24 h]; Plumber [48 h]; Excavation [6] | 820.24 | MEP | PL & D | 2f |
| P6-MEP-PL-B2-2040 |  | Water Supply Pipes Pressure Test | 6d | 2015-05-06 | 2015-05-12 | P6-MEP-PL-B2-2030, P6-ST-B1-1080 FS+14d | 246d | 36d | Cash Flow [145.74 h]; Plumber [48 h]; Excavation [6] | 145.74 | MEP | PL & D | 2f |
|  | 4 | **Final Fix** |  | 2015-05-13 | 2015-05-19 |  |  |  |  |  |  |  |  |
| P6-MEP-PL-B2-3000 |  | Manhole Covers Installation | 6d | 2015-05-13 | 2015-05-19 | P6-MEP-PL-B2-2020, P6-ST-B1-1080 FS+14d | 253d | 36d | Cash Flow [488.57 h]; Plumber [37.5 h]; Excavation [6] | 488.57 | MEP | PL & D | ff |
|  | 3 | **Fire Fighting Works** |  | 2015-03-29 | 2015-05-26 |  |  |  |  |  |  |  |  |
|  | 1 | **1st Fix** |  | 2015-03-29 | 2015-04-11 |  |  |  |  |  |  |  |  |
| P6-MEP-FF-B2-1000 |  | Supports and Hungers installation | 12d | 2015-03-29 | 2015-04-11 | OFF-ENG-MEP-FF1090, OFF-PRO-MEP-DR1020, P6-ST-B1-1080 FS+14d | 239d | 0d | Cash Flow [35.86 h]; Plumber [288 h]; Excavation [12] | 35.86 | MEP | FF | 1f |

| ID | WBS | Activity | Duration | Start | Finish | Predecessors | Total float | Free float | Resources | Cost | Responsibility | MEP Systems | Fix | MEP Steps |
| --- | --- | --- | --- | --- | --- | --- | --- | --- | --- | --- | --- | --- | --- | --- |
|  | 3 | **2nd Fix** |  | 2015-04-12 | 2015-05-12 |  |  |  |  |  |  |  |  |  |
| P6-MEP-FF-B2-2000 |  | Sprinkler Pipes and Fittings Installation | 21d | 2015-04-12 | 2015-05-05 | P6-MEP-FF-B2-1000, OFF-PRO-MEP-FF1070, P6-ST-B1-1080 FS+14d | 239d | 0d | Cash Flow [35356.3 h]; Plumber [672 h]; Excavation [21] | 35,356.33 | MEP | FF | 2f |  |
| P6-MEP-FF-B2-2010 |  | Sprinkler Pipes Pressure Test | 6d | 2015-05-06 | 2015-05-12 | P6-MEP-FF-B2-2000, P6-ST-B1-1080 FS+14d | 248d | 0d | Cash Flow [1964.24 h]; Plumber [96 h]; Excavation [6] | 1,964.24 | MEP | FF | 2f |  |
|  | 4 | **Final Fix** |  | 2015-05-13 | 2015-05-26 |  |  |  |  |  |  |  |  |  |
| P6-MEP-FF-B2-3000 |  | Sprinkler Head Installation | 12d | 2015-05-13 | 2015-05-26 | P6-MEP-FF-B2-2010, P6-ST-B1-1080 FS+14d | 248d | 30d | Plumber [576 h]; Cash Flow [4522.33 h]; Excavation [12] | 4,522.33 | MEP | FF | ff |  |
|  | 3 | **Electrical System** |  | 2015-03-29 | 2015-07-06 |  |  |  |  |  |  |  |  |  |
|  | 1 | **1st Fix** |  | 2015-03-29 | 2015-04-18 |  |  |  |  |  |  |  |  |  |
| P6-MEP-EL-B2-1010 |  | PVC Back Boxes and Conduits Fixing in Wall | 12d | 2015-03-29 | 2015-04-11 | ENGMEP8620, ENGMEP8810, ENGMEP9030, ENGMEP9190, ENGMEP9470, ENGMEP9610, PROCMEPELE1990, PROCMEPELE2080, P6-ST-B1-1080 FS+14d | 143d | 0d | Cash Flow [3307.67 h]; Electrician [384 h]; Excavation [12] | 3,307.67 | MEP | EL | 1f | 1st Fix |
| P6-MEP-EL-B2-1000 |  | DB's Inclosure Fixing | 6d | 2015-04-12 | 2015-04-18 | ENGMEP8620, ENGMEP8810, P6-ST-B1-1080 FS+14d, P6-MEP-EL-B2-1010 | 161d | 0d | Cash Flow [2130.4 h]; Electrician [96 h]; Excavation [6] | 2,130.4 | MEP | EL | 1f | 1st Fix |
|  | 2 | **2nd Fix** |  | 2015-04-12 | 2015-06-16 |  |  |  |  |  |  |  |  |  |
| P6-MEP-EL-B2-2030 |  | Fire Alarm System Wiring | 12d | 2015-04-12 | 2015-04-25 | PROCMEPELE8650, P6-MEP-EL-B2-1010, P6-ST-B1-1080 FS+14d | 192d | 41d | Cash Flow [7111.01 h]; Electrician [192 h]; Excavation [12] | 7,111.01 | MEP | EL | 2f | 2nd Fix |
| P6-MEP-EL-B2-2040 |  | Lighting Wiring | 12d | 2015-04-12 | 2015-04-25 | PROCMEPELE5680, P6-MEP-EL-B2-1010, P6-ST-B1-1080 FS+14d | 143d | 0d | Cash Flow [3566.08 h]; Electrician [241.71 h]; Excavation [12] | 3,566.08 | MEP | EL | 2f | 2nd Fix |
| P6-MEP-EL-B2-2060 |  | BMS System Wiring | 8d | 2015-04-12 | 2015-04-20 | PROCMEPELE9100, P6-MEP-EL-B2-1010, P6-ST-B1-1080 FS+14d | 202d | 16d | Cash Flow [15183.4 h]; Electrician [186 h]; Excavation [8] | 15,183.44 | MEP | EL | 2f | 2nd Fix |
| P6-MEP-EL-B2-2000 |  | DB's Installation and Termination | 12d | 2015-04-19 | 2015-05-02 | P6-MEP-EL-B2-1000, P6-ST-B1-1080 FS+14d, P6-MEP-EL-B2-1010, PROCMEPELE8920 | 228d | 27d | Cash Flow [4970.93 h]; Electrician [288 h]; Excavation [12] | 4,970.93 | MEP | EL | 2f | 2nd Fix |
| P6-MEP-EL-B2-2050 |  | Power Points Wiring | 12d | 2015-04-26 | 2015-05-09 | PROCMEPELE5680, P6-MEP-EL-B2-1010, P6-ST-B1-1080 FS+14d, P6-MEP-EL-B2-2040 | 143d | 0d | Cash Flow [2894.21 h]; Electrician [192 h]; Excavation [12] | 2,894.21 | MEP | EL | 2f | 2nd Fix |
| P6-MEP-EL-B2-2010 |  | SMDB's Installation | 6d | 2015-05-10 | 2015-05-16 | P6-MEP-EL-B2-1010, P6-ST-B1-1080 FS+14d, P6-MEP-EL-B2-2060, P6-MEP-EL-B2-2050, PROCMEPELE9380 | 186d | 29d | Cash Flow [4970.93 h]; Electrician [48 h]; Excavation [6] | 4,970.93 | MEP | EL | 2f | 2nd Fix |
| P6-MEP-EL-B2-2020 |  | Cable Tray and Trunking Installation | 21d | 2015-05-10 | 2015-06-02 | PROCMEPELE3340, P6-ST-B1-1080 FS+14d, P6-MEP-EL-B2-1010, P6-MEP-EL-B2-1000, P6-MEP-EL-B2-2050 | 143d | 0d | Cash Flow [9064.45 h]; Electrician [504 h]; Excavation [21] | 9,064.45 | MEP | EL | 2f | 2nd Fix |
| P6-MEP-EL-B2-2070 |  | Emergency Light Wiring | 8d | 2015-06-03 | 2015-06-10 | PROCMEPELE9330, P6-MEP-EL-B2-1010, P6-ST-B1-1080 FS+14d, P6-MEP-EL-B2-2050, P6-MEP-EL-B2-2020, PROCMEPELE9330 FF | 143d | 0d | Cash Flow [1202.03 h]; Electrician [128 h]; Excavation [8] | 1,202.03 | MEP | EL | 2f | 2nd Fix |
| P6-MEP-EL-B2-3040 |  | Power Cable Puling | 14d | 2015-06-03 | 2015-06-16 | P6-MEP-EL-B2-2020, P6-MEP-EL-B2-2040, P6-MEP-EL-B2-2050, P6-ST-B1-1080 FS+14d, P6-MEP-EL-B2-2000 | 201d | 0d | Cash Flow [13632.3 h]; Electrician [168 h]; Excavation [14] | 13,632.33 | MEP | EL | 2f | 2nd Fix |
|  | 3 | **Final Fix** |  | 2015-06-11 | 2015-07-06 |  |  |  |  |  |  |  |  |  |
| P6-MEP-EL-B2-3010 |  | Fire Alarm System Detector Installation | 12d | 2015-06-11 | 2015-06-22 | P6-MEP-EL-B2-2030, P6-ST-B1-1080 FS+14d, P6-MEP-EL-B2-2070, PROCMEPELE8650 | 214d | 0d | Cash Flow [4034.38 h]; Electrician [192 h]; Excavation [12] | 4,034.38 | MEP | EL | ff | Final F |
| P6-MEP-EL-B2-3030 |  | SMDB's Termination and Final Connection | 6d | 2015-06-17 | 2015-06-22 | P6-MEP-EL-B2-2010, P6-MEP-EL-B2-2050, P6-ST-B1-1080 FS+14d, P6-MEP-EL-B2-2070, P6-MEP-EL-B2-3040 | 207d | 0d | Cash Flow [2785.83 h]; Electrician [192 h]; Excavation [6] | 2,785.82 | MEP | EL | ff | Final F |
| P6-MEP-EL-B2-3020 |  | Lights Fitting Fixing | 14d | 2015-06-23 | 2015-07-06 | PROCMEPELE8560, P6-MEP-EL-B2-2040, P6-ST-B1-1080 FS+14d, P6-MEP-EL-B2-2070, P6-MEP-EL-B2-3030, P6-MEP-EL-B2-3040 | 207d | 64d | Cash Flow [7322.66 h]; Electrician [244 h]; Excavation [14] | 7,322.66 | MEP | EL | ff | Final F |
| P6-MEP-EL-B2-3050 |  | Sockets and Switches Fixing | 8d | 2015-06-23 | 2015-06-30 | PROCMEPELE8830, P6-MEP-EL-B2-2050, P6-ST-B1-1080 FS+14d, P6-MEP-EL-B2-2070, P6-MEP-EL-B2-3030 | 218d | 0d | Cash Flow [1166.96 h]; Electrician [128 h]; Excavation [8] | 1,166.96 | MEP | EL | ff | Final F |
| P6-MEP-EL-B2-3060 |  | Emergency Light Fixing | 8d | 2015-06-23 | 2015-06-30 | P6-MEP-EL-B2-3050 SS, P6-MEP-EL-B2-2070, P6-ST-B1-1080 FS+14d, P6-MEP-EL-B2-3030, P6-MEP-EL-B2-3040, P6-MEP-EL-B2-3010 | 218d | 0d | Cash Flow [5714.02 h]; Electrician [128 h]; Excavation [8] | 5,714.02 | MEP | EL | ff | Final F |
| P6-MEP-EL-B2-3000 |  | CO2 System Installation | 6d | 2015-06-25 | 2015-06-30 | P6-ST-B1-1080 FS+14d, P6-MEP-EL-B2-3060 FF, P6-MEP-EL-B2-3030 | 225d | 60d | Cash Flow [21027.8 h]; Electrician [179.65 h]; Excavation [6] | 21,027.76 | MEP | EL | ff | Final F |

| ID | WBS | Activity | Duration | Start | Finish | Predecessors | Total float | Free float | Resources | Cost | Structural | Responsibility | MEP Systems | MEP Steps | Fix |
| --- | --- | --- | --- | --- | --- | --- | --- | --- | --- | --- | --- | --- | --- | --- | --- |
|  | 2 | **Basement 1** |  | 2015-01-22 | 2015-09-22 |  |  |  |  |  |  |  |  |  |  |
|  | 1 | **Structural** |  | 2015-01-22 | 2015-03-11 |  |  |  |  |  |  |  |  |  |  |
| P6-ST-B1-1000 |  | Reinforcement for Verticals | 12d | 2015-01-22 | 2015-02-04 | P6-ST-B2-1060 | 112d | 0d | MNHRS [894.2 h]; Cash Flow [110176 h]; Reinforcement [47381.3]; Excavation [12] | 110,175.68 | STR |  |  |  |  |
| P6-ST-B1-1010 |  | MEP Works in Vertical Element | 5d | 2015-01-31 | 2015-02-04 | ENGMEP8620, P6-ST-B1-1000 FF | 120d | 8d | Cash Flow [1798.55 h]; Electrician [160 h]; Excavation [5] | 1,798.55 |  | MEP | EL | B.W |  |
| P6-ST-B1-1020 |  | FW for Verticals | 8d | 2015-02-05 | 2015-02-14 | P6-ST-B1-1000 | 112d | 0d | MNHRS [17712 h]; Cash Flow [143709 h]; FW [2500.6]; Excavation [8] | 143,708.65 | STR |  |  |  |  |
| P6-ST-B1-1030 |  | Concrete Verticals | 1d | 2015-02-15 | 2015-02-15 | P6-ST-B1-1020, P6-ST-B1-1010 | 112d | 0d | MNHRS [3190.81 h]; Cash Flow [45189.6 h]; Concrete [385.5]; Excavation [1] | 45,189.6 | STR |  |  |  |  |
| P6-ST-B1-1040 |  | FW for Slab | 10d | 2015-02-16 | 2015-02-26 | P6-ST-B1-1030 | 112d | 0d | MNHRS [21904.2 h]; Cash Flow [177721 h]; FW [3092.5]; Excavation [10] | 177,721.39 | STR |  |  |  |  |
| P6-ST-B1-1060 |  | Reinforcement for Slab | 10d | 2015-02-28 | 2015-03-10 | P6-ST-B1-1040 | 112d | 0d | MNHRS [2721.8 h]; Cash Flow [335840 h]; Reinforcement [144428]; Excavation [10] | 335,840.19 | STR |  |  |  |  |
| P6-ST-B1-1070 |  | MEP Works in Slab & Beams | 5d | 2015-03-05 | 2015-03-10 | ENGMEP8620, P6-ST-B1-1060 FF | 112d | 0d | Cash Flow [3349.02 h]; Electrician [320 h]; Excavation [5] | 3,349.02 |  | MEP | EL | B.W |  |
| P6-ST-B1-1080 |  | Concrete for Slab | 1d | 2015-03-11 | 2015-03-11 | P6-ST-B1-1060, P6-ST-B1-1070 | 112d | 0d | MNHRS [7087.21 h]; Cash Flow [218115 h]; Concrete [856.25]; Excavation [1] | 218,114.99 | STR |  |  |  |  |
|  | 2 | **Fiishing** |  |  |  |  |  |  |  |  |  |  |  |  |  |
|  | 4 | **MEP Work** |  | 2015-05-17 | 2015-09-22 |  |  |  |  |  |  |  |  |  |  |
|  | 1 | **Mechanical System** |  | 2015-05-17 | 2015-07-08 |  |  |  |  |  |  |  |  |  |  |
|  | 2 | **HVAC Works** |  | 2015-05-17 | 2015-06-24 |  |  |  |  |  |  |  |  |  |  |
|  | 1 | **1st Fix** |  | 2015-05-17 | 2015-05-30 |  |  |  |  |  |  |  |  |  |  |
| P6-MEP-AC-B1-1000 |  | Supports and Hungers Fixing | 12d | 2015-05-17 | 2015-05-30 | OFF-ENG-MEP-AC1140, P6-MEP-AC-B2-1000, P6-ST-GF-1060 FS+14d | 233d | 0d | Cash Flow [17480 h]; Ductman [192 h]; Excavation [12] | 17,479.95 |  | MEP | AC |  | 1f |
|  | 3 | **2nd Fix** |  | 2015-05-31 | 2015-06-14 |  |  |  |  |  |  |  |  |  |  |
| P6-MEP-AC-B1-2000 |  | Fan's Installation | 15d | 2015-05-31 | 2015-06-14 | P6-MEP-AC-B1-1000, P6-ST-GF-1060 FS+14d, P6-MEP-AC-B2-2000 | 233d | 0d | Cash Flow [102656 h]; Ductman [134.4 h]; Excavation [15] | 102,656.42 |  | MEP | AC |  | 2f |
|  | 4 | **Final Fix** |  | 2015-06-15 | 2015-06-24 |  |  |  |  |  |  |  |  |  |  |
| P6-MEP-AC-B1-3000 |  | Grills and Diffusers Fixing | 10d | 2015-06-15 | 2015-06-24 | P6-MEP-AC-B1-2000, P6-MEP-AC-B2-3000, P6-ST-GF-1060 FS+14d | 233d | 152d | Cash Flow [157320 h]; Ductman [320 h]; Excavation [10] | 157,319.53 |  | MEP | AC |  | ff |
|  | 1 | **Plumbing and Drainage Works** |  | 2015-05-17 | 2015-07-02 |  |  |  |  |  |  |  |  |  |  |
|  | 1 | **1st Fix** |  | 2015-05-17 | 2015-05-30 |  |  |  |  |  |  |  |  |  |  |
| P6-MEP-PL-B1-1000 |  | Supports installation for High level Pipes | 12d | 2015-05-17 | 2015-05-30 | OFF-ENG-MEP-DR1110, OFF-ENG-MEP-WS1100, P6-MEP-PL-B2-1000, P6-ST-GF-1060 FS+14d | 210d | 0d | Cash Flow [819.68 h]; Plumber [16.35 h]; Excavation [12] | 819.68 |  | MEP | PL & D |  | 1f |
|  | 3 | **2nd Fix** |  | 2015-05-17 | 2015-06-26 |  |  |  |  |  |  |  |  |  |  |
| P6-MEP-PL-B1-2000 |  | Parking Drain Installation | 6d | 2015-05-17 | 2015-05-23 | OFF-ENG-MEP-DR1110, P6-MEP-PL-B2-2000, P6-ST-GF-1060 FS+14d | 244d | 27d | Cash Flow [547.83 h]; Plumber [48 h]; Excavation [6] | 547.83 |  | MEP | PL & D |  | 2f |
| P6-MEP-PL-B1-2010 |  | High Level Drainage Pipes Installation | 21d | 2015-05-31 | 2015-06-20 | P6-MEP-PL-B1-1000, P6-MEP-PL-B2-2010, P6-ST-GF-1060 FS+14d | 217d | 0d | Cash Flow [6562.53 h]; Plumber [244.38 h]; Excavation [21] | 6,562.53 |  | MEP | PL & D |  | 2f |
| P6-MEP-PL-B1-2030 |  | High Level Water Supply Pipes and Fittings Installation | 21d | 2015-05-31 | 2015-06-20 | P6-MEP-PL-B1-1000, P6-MEP-PL-B2-2030, P6-ST-GF-1060 FS+14d | 210d | 0d | Cash Flow [1308.6 h]; Plumber [150.02 h]; Excavation [21] | 1,308.6 |  | MEP | PL & D |  | 2f |
| P6-MEP-PL-B1-2020 |  | Drainage Pipes Gravity Test | 6d | 2015-06-21 | 2015-06-26 | P6-MEP-PL-B1-2010, P6-MEP-PL-B1-2000, P6-ST-GF-1060 FS+14d, P6-MEP-PL-B2-2020 | 217d | 0d | Cash Flow [820.24 h]; Plumber [48 h]; Excavation [6] | 820.24 |  | MEP | PL & D |  | 2f |
| P6-MEP-PL-B1-2040 |  | Water Supply Pipes Pressure Test | 6d | 2015-06-21 | 2015-06-26 | P6-MEP-PL-B1-2030, P6-ST-GF-1060 FS+14d, P6-MEP-PL-B2-2040 | 210d | 150d | Cash Flow [145.74 h]; Plumber [48 h]; Excavation [6] | 145.74 |  | MEP | PL & D |  | 2f |

| ID | WBS | Activity | Duration | Start | Finish | Predecessors | Total float | Free float | Resources | Cost | Responsibility | MEP Systems | Fix | MEP Steps |
| --- | --- | --- | --- | --- | --- | --- | --- | --- | --- | --- | --- | --- | --- | --- |
|  | 4 | **Final Fix** |  | 2015-06-27 | 2015-07-02 |  |  |  |  |  |  |  |  |  |
| P6-MEP-PL-B1-3000 |  | Manhole Covers Installation | 6d | 2015-06-27 | 2015-07-02 | P6-MEP-PL-B2-3000, P6-MEP-PL-B1-2020, P6-ST-GF-1060 FS+14d | 217d | 144d | Cash Flow [488.57 h]; Plumber [37.5 h]; Excavation [6] | 488.57 | MEP | PL & D | ff |  |
|  | 3 | **Fire Fighting Works** |  | 2015-05-17 | 2015-07-08 |  |  |  |  |  |  |  |  |  |
|  | 1 | **1st Fix** |  | 2015-05-17 | 2015-05-30 |  |  |  |  |  |  |  |  |  |
| P6-MEP-FF-B1-1000 |  | Supports and Hungers installation | 12d | 2015-05-17 | 2015-05-30 | OFF-ENG-MEP-FF1100, P6-MEP-FF-B2-1000, P6-ST-GF-1060 FS+14d | 218d | 0d | Cash Flow [35.86 h]; Plumber [288 h]; Excavation [12] | 35.86 | MEP | FF | 1f |  |
|  | 3 | **2nd Fix** |  | 2015-05-31 | 2015-06-26 |  |  |  |  |  |  |  |  |  |
| P6-MEP-FF-B1-2000 |  | Sprinkler Pipes and Fittings Installation | 21d | 2015-05-31 | 2015-06-20 | P6-MEP-FF-B1-1000, P6-MEP-FF-B2-2000, P6-ST-GF-1060 FS+14d | 218d | 0d | Cash Flow [35356.3 h]; Plumber [672 h]; Excavation [21] | 35,356.33 | MEP | FF | 2f |  |
| P6-MEP-FF-B1-2010 |  | Sprinkler Pipes Pressure Test | 6d | 2015-06-21 | 2015-06-26 | P6-MEP-FF-B1-2000, P6-ST-GF-1060 FS+14d | 218d | 0d | Cash Flow [1964.24 h]; Plumber [96 h]; Excavation [6] | 1,964.24 | MEP | FF | 2f |  |
|  | 4 | **Final Fix** |  | 2015-06-27 | 2015-07-08 |  |  |  |  |  |  |  |  |  |
| P6-MEP-FF-B1-3000 |  | Sprinkler Head Installation | 12d | 2015-06-27 | 2015-07-08 | P6-MEP-FF-B1-2010, P6-MEP-FF-B2-3000, P6-ST-GF-1060 FS+14d | 218d | 138d | Plumber [576 h]; Cash Flow [4522.33 h]; Excavation [12] | 4,522.33 | MEP | FF | ff |  |
|  | 3 | **Electrical System** |  | 2015-05-17 | 2015-09-22 |  |  |  |  |  |  |  |  |  |
|  | 1 | **1st Fix** |  | 2015-05-17 | 2015-06-05 |  |  |  |  |  |  |  |  |  |
| P6-MEP-EL-B1-1010 |  | PVC Back Boxes and Conduits Fixing in Wall | 12d | 2015-05-17 | 2015-05-30 | ENGMEP9620, ENGMEP9480, ENGMEP9200, ENGMEP9040, ENGMEP8820, ENGMEP8620, PROCMEPELE1990, PROCMEPELE2080, P6-ST-GF-1060 FS+14d, P6-MEP-EL-B2-1010 | 154d | 0d | Cash Flow [3307.67 h]; Electrician [384 h]; Excavation [12] | 3,307.67 | MEP | EL | 1f | 1st Fix |
| P6-MEP-EL-B1-1000 |  | DB's Inclosure Fixing | 6d | 2015-05-31 | 2015-06-05 | ENGMEP8820, ENGMEP8620, P6-ST-GF-1060 FS+14d, P6-MEP-EL-B2-1000, P6-MEP-EL-B1-1010 | 200d | 25d | Cash Flow [2130.4 h]; Electrician [96 h]; Excavation [6] | 2,130.4 | MEP | EL | 1f | 1st Fix |
|  | 2 | **2nd Fix** |  | 2015-06-11 | 2015-08-27 |  |  |  |  |  |  |  |  |  |
| P6-MEP-EL-B1-2070 |  | Emergency Light Wiring | 8d | 2015-06-11 | 2015-06-18 | PROCMEPELE9330, P6-MEP-EL-B1-1010, P6-ST-GF-1060 FS+14d, P6-MEP-EL-B2-2070 | 143d | 0d | Cash Flow [1202.03 h]; Electrician [128 h]; Excavation [8] | 1,202.03 | MEP | EL | 2f | 2nd Fix |
| P6-MEP-EL-B1-2050 |  | Fire Alarm System Wiring | 12d | 2015-06-19 | 2015-06-30 | PROCMEPELE8650, P6-MEP-EL-B1-1010, P6-ST-GF-1060 FS+14d, P6-MEP-EL-B1-2070, P6-MEP-EL-B2-2030 | 143d | 0d | Cash Flow [7111.01 h]; Electrician [192 h]; Excavation [12] | 7,111.01 | MEP | EL | 2f | 2nd Fix |
| P6-MEP-EL-B1-2000 |  | DB's Installation and Termination | 12d | 2015-07-01 | 2015-07-12 | P6-MEP-EL-B1-1000, P6-ST-GF-1060 FS+14d, P6-MEP-EL-B1-2050, P6-MEP-EL-B2-2000 | 175d | 32d | Cash Flow [4970.93 h]; Electrician [288 h]; Excavation [12] | 4,970.93 | MEP | EL | 2f | 2nd Fix |
| P6-MEP-EL-B1-2010 |  | SMDB's , MDB's Installation | 12d | 2015-07-01 | 2015-07-12 | P6-MEP-EL-B1-1010, P6-ST-GF-1060 FS+14d, P6-MEP-EL-B1-2050, P6-MEP-EL-B2-2010 | 143d | 0d | Cash Flow [4196.6 h]; Electrician [336 h]; Excavation [12] | 4,196.6 | MEP | EL | 2f | 2nd Fix |
| P6-MEP-EL-B1-2040 |  | Cable Tray and Trunking Installation | 21d | 2015-07-01 | 2015-07-21 | PROCMEPELE3340, P6-ST-GF-1060 FS+14d, P6-MEP-EL-B1-2050, P6-MEP-EL-B2-2020 | 166d | 23d | Cash Flow [9064.45 h]; Electrician [504 h]; Excavation [21] | 9,064.45 | MEP | EL | 2f | 2nd Fix |
| P6-MEP-EL-B1-2060 |  | BMS System Wiring | 8d | 2015-07-13 | 2015-07-20 | PROCMEPELE9100, P6-MEP-EL-B1-1010, P6-ST-GF-1060 FS+14d, P6-MEP-EL-B1-1010 FF, P6-MEP-EL-B1-2010, P6-MEP-EL-B2-2060 | 143d | 0d | Cash Flow [15183.4 h]; Electrician [186 h]; Excavation [8] | 15,183.44 | MEP | EL | 2f | 2nd Fix |
| P6-MEP-EL-B1-2020 |  | Lighting Wiring | 12d | 2015-07-21 | 2015-08-01 | P6-MEP-EL-B1-1010, P6-ST-GF-1060 FS+14d, P6-MEP-EL-B1-2060, P6-MEP-EL-B2-2040 | 143d | 0d | Cash Flow [3566.08 h]; Electrician [241.71 h]; Excavation [12] | 3,566.08 | MEP | EL | 2f | 2nd Fix |
| P6-MEP-EL-B1-2030 |  | Power Points Wiring | 12d | 2015-08-02 | 2015-08-13 | P6-MEP-EL-B1-1010, P6-ST-GF-1060 FS+14d, P6-MEP-EL-B1-2020, P6-MEP-EL-B2-2050 | 143d | 0d | Cash Flow [2894.21 h]; Electrician [192 h]; Excavation [12] | 2,894.21 | MEP | EL | 2f | 2nd Fix |
| P6-MEP-EL-B1-3040 |  | Power Cable Puling | 14d | 2015-08-14 | 2015-08-27 | P6-MEP-EL-B1-2040, P6-MEP-EL-B1-2020, P6-MEP-EL-B1-2030, P6-ST-GF-1060 FS+14d, P6-MEP-EL-B1-2000, P6-MEP-EL-B2-3040 | 143d | 0d | Cash Flow [13632.3 h]; Electrician [168 h]; Excavation [14] | 13,632.33 | MEP | EL | 2f | 2nd Fix |

| ID | WBS | Activity | Duration | Start | Finish | Predecessors | Total float | Free float | Resources | Cost | Responsibility | MEP Systems | MEP Steps | Fix | Structural |
| --- | --- | --- | --- | --- | --- | --- | --- | --- | --- | --- | --- | --- | --- | --- | --- |
|  | 3 | **Final Fix** |  | 2015-08-14 | 2015-09-22 |  |  |  |  |  |  |  |  |  |  |
| P6-MEP-EL-B1-3030 |  | Fire Alarm System Detector Installation | 12d | 2015-08-14 | 2015-08-25 | P6-MEP-EL-B1-2050, P6-ST-GF-1060 FS+14d, P6-MEP-EL-B1-2030, P6-MEP-EL-B2-3010 | 162d | 2d | Cash Flow [4034.38 h]; Electrician [192 h]; Excavation [12] | 4,034.38 | MEP | EL | Final F | ff |  |
| P6-MEP-EL-B1-3010 |  | SMDB's , MDB's Termination and Final Connection | 12d | 2015-08-28 | 2015-09-08 | P6-MEP-EL-B1-2010, P6-MEP-EL-B1-2030, P6-ST-GF-1060 FS+14d, P6-MEP-EL-B1-3040, P6-MEP-EL-B2-3030 | 143d | 0d | Cash Flow [20725.6 h]; Electrician [384 h]; Excavation [12] | 20,725.64 | MEP | EL | Final F | ff |  |
| P6-MEP-EL-B1-3050 |  | Sockets and Switches Fixing | 8d | 2015-08-28 | 2015-09-04 | PROCMEPELE8830, P6-MEP-EL-B1-2030, P6-ST-GF-1060 FS+14d, P6-MEP-EL-B1-3040, P6-MEP-EL-B2-3050 | 160d | 0d | Cash Flow [1166.96 h]; Electrician [128 h]; Excavation [8] | 1,166.96 | MEP | EL | Final F | ff |  |
| P6-MEP-EL-B1-3060 |  | Emergency Light Fixing | 8d | 2015-08-28 | 2015-09-04 | P6-MEP-EL-B1-3050 SS, P6-MEP-EL-B1-2070, P6-ST-GF-1060 FS+14d, P6-MEP-EL-B1-3040, P6-MEP-EL-B1-3040 FF, P6-MEP-EL-B1-3030, P6-MEP-EL-B2-3060 | 160d | 0d | Cash Flow [5714.02 h]; Electrician [128 h]; Excavation [8] | 5,714.02 | MEP | EL | Final F | ff |  |
| P6-MEP-EL-B1-3000 |  | CO2 System Installation | 6d | 2015-08-30 | 2015-09-04 | P6-ST-GF-1060 FS+14d, P6-MEP-EL-B1-3060 FF, P6-MEP-EL-B2-3000 | 165d | 80d | Cash Flow [21027.8 h]; Electrician [179.65 h]; Excavation [6] | 21,027.76 | MEP | EL | Final F | ff |  |
| P6-MEP-EL-B1-3020 |  | Lights Fitting Fixing | 14d | 2015-09-09 | 2015-09-22 | PROCMEPELE8560, P6-MEP-EL-B1-2020, P6-ST-GF-1060 FS+14d, P6-MEP-EL-B1-2030, P6-MEP-EL-B1-3010, P6-MEP-EL-B2-3020 | 143d | 105d | Cash Flow [7322.66 h]; Electrician [244 h]; Excavation [14] | 7,322.66 | MEP | EL | Final F | ff |  |
|  | 4 | **Ground Floor** |  | 2015-03-12 | 2015-04-29 |  |  |  |  |  |  |  |  |  |  |
|  | 1 | **Structural** |  | 2015-03-12 | 2015-04-29 |  |  |  |  |  |  |  |  |  |  |
| P6-ST-GF-1000 |  | Reinforcement for Verticals | 12d | 2015-03-12 | 2015-03-25 | P6-ST-B1-1080 | 154d | 0d | MNHRS [894.2 h]; Cash Flow [110176 h]; Reinforcement [47381.3]; Excavation [12] | 110,175.68 |  |  |  |  | STR |
| P6-ST-GF-1010 |  | FW for Verticals | 8d | 2015-03-26 | 2015-04-04 | P6-ST-GF-1000 | 154d | 0d | MNHRS [17712 h]; Cash Flow [143709 h]; FW [2500.6]; Excavation [8] | 143,708.65 |  |  |  |  | STR |
| P6-ST-GF-1020 |  | Concrete Verticals | 1d | 2015-04-05 | 2015-04-05 | P6-ST-GF-1010 | 154d | 0d | MNHRS [3190.81 h]; Cash Flow [45189.6 h]; Concrete [385.5]; Excavation [1] | 45,189.6 |  |  |  |  | STR |
| P6-ST-GF-1030 |  | FW for Slab | 10d | 2015-04-06 | 2015-04-16 | P6-ST-GF-1020 | 154d | 0d | MNHRS [21904.2 h]; Cash Flow [177721 h]; FW [3092.5]; Excavation [10] | 177,721.39 |  |  |  |  | STR |
| P6-ST-GF-1050 |  | Reinforcement for Slab | 10d | 2015-04-18 | 2015-04-28 | P6-ST-GF-1030 | 154d | 0d | MNHRS [2721.8 h]; Cash Flow [335840 h]; Reinforcement [144428]; Excavation [10] | 335,840.19 |  |  |  |  | STR |
| P6-ST-GF-1060 |  | Concrete for Slab | 1d | 2015-04-29 | 2015-04-29 | P6-ST-GF-1050 | 154d | 0d | MNHRS [7087.21 h]; Cash Flow [218115 h]; Concrete [856.25]; Excavation [1] | 218,114.99 |  |  |  |  | STR |
|  | 2 | **Fiishing** |  |  |  |  |  |  |  |  |  |  |  |  |  |
|  | 4 | **Part 7** |  | 2015-03-12 | 2015-10-23 |  |  |  |  |  |  |  |  |  |  |
|  | 1 | **Basement 2** |  | 2015-03-12 | 2015-09-20 |  |  |  |  |  |  |  |  |  |  |
|  | 1 | **Structural** |  | 2015-03-12 | 2015-05-04 |  |  |  |  |  |  |  |  |  |  |
| P7-ST-B2-1000 |  | Blinding | 5d | 2015-03-12 | 2015-03-17 | P6-ST-B1-1080 | 112d | 0d | Excavation [5] |  |  |  |  |  | STR |
| P7-ST-B2-1010 |  | Waterproofing | 10d | 2015-03-18 | 2015-03-29 | P7-ST-B2-1000 | 112d | 0d | MNHRS [182.77 h]; Waterproofing [449]; Excavation [10] |  |  |  |  |  | STR |
| P7-ST-B2-1020 |  | Formwork | 10d | 2015-03-30 | 2015-04-09 | P7-ST-B2-1000, P7-ST-B2-1010 | 112d | 0d | MNHRS [21658.1 h]; Cash Flow [175724 h]; FW [3057.7]; Excavation [10] | 175,724.37 |  |  |  |  | STR |
| P7-ST-B2-1030 |  | Reinforcement | 20d | 2015-04-11 | 2015-05-03 | P7-ST-B2-1020 | 112d | 0d | MNHRS [2768.75 h]; Cash Flow [341628 h]; Reinforcement [146917]; Excavation [20] | 341,628.38 |  |  |  |  | STR |
| P7-ST-B2-1040 |  | MEP Works in Raft | 5d | 2015-04-28 | 2015-05-03 | ENGMEP8700, P7-ST-B2-1030 FF | 112d | 0d | Cash Flow [13051 h]; Plumber [312 h]; Excavation [5] | 13,051 | MEP | PL & D | B.W |  |  |
| P7-ST-B2-1050 |  | Earthing Works | 5d | 2015-04-28 | 2015-05-03 | P7-ST-B2-1040 SS, ENGMEP8700, ENGMEP8910, PROCMEPELE1810 | 112d | 0d | Cash Flow [8362.29 h]; Electrician [408 h]; Excavation [5] | 8,362.29 | MEP | EL | B.W |  |  |
| P7-ST-B2-1060 |  | Concrete | 1d | 2015-05-04 | 2015-05-04 | P7-ST-B2-1030, P7-ST-B2-1040, P7-ST-B2-1050 | 112d | 0d | MNHRS [14424.9 h]; Cash Flow [443936 h]; Concrete [1742.75]; Excavation [1] | 443,935.63 |  |  |  |  | STR |

| ID | WBS | Activity | Duration | Start | Finish | Predecessors | Total float | Free float | Resources | Cost | Responsibility | MEP Systems | Fix |
| --- | --- | --- | --- | --- | --- | --- | --- | --- | --- | --- | --- | --- | --- |
|  | 2 | **Fiishing** |  |  |  |  |  |  |  |  |  |  |  |
|  | 4 | **MEP Works** |  | 2015-07-04 | 2015-09-20 |  |  |  |  |  |  |  |  |
|  | 1 | **Mechanical System** |  | 2015-07-04 | 2015-08-23 |  |  |  |  |  |  |  |  |
|  | 2 | **HVAC Works** |  | 2015-07-04 | 2015-08-09 |  |  |  |  |  |  |  |  |
|  | 1 | **1st Fix** |  | 2015-07-04 | 2015-07-15 |  |  |  |  |  |  |  |  |
| P7-MEP-AC-B2-1000 |  | Supports and Hungers Fixing | 12d | 2015-07-04 | 2015-07-15 | OFF-ENG-MEP-AC1130, OFF-PRO-MEP-DR1020, P7-ST-B1-1080 FS+14d | 172d | 0d | Cash Flow [17480 h]; Ductman [192 h]; Excavation [12] | 17,479.95 | MEP | AC | 1f |
|  | 3 | **2nd Fix** |  | 2015-07-16 | 2015-07-30 |  |  |  |  |  |  |  |  |
| P7-MEP-AC-B2-2000 |  | Fan's Installation | 15d | 2015-07-16 | 2015-07-30 | P7-MEP-AC-B2-1000, OFF-PRO-MEP-AC1470, P7-ST-B1-1080 FS+14d | 172d | 0d | Cash Flow [102656 h]; Ductman [134.4 h]; Excavation [15] | 102,656.42 | MEP | AC | 2f |
|  | 4 | **Final Fix** |  | 2015-07-31 | 2015-08-09 |  |  |  |  |  |  |  |  |
| P7-MEP-AC-B2-3000 |  | Grills and Diffusers Fixing | 10d | 2015-07-31 | 2015-08-09 | P7-MEP-AC-B2-2000, OFF-PRO-MEP-AC1140, P7-ST-B1-1080 FS+14d | 177d | 32d | Cash Flow [157320 h]; Ductman [320 h]; Excavation [10] | 157,319.53 | MEP | AC | ff |
|  | 1 | **Plumbing and Drainage Works** |  | 2015-07-04 | 2015-08-17 |  |  |  |  |  |  |  |  |
|  | 1 | **1st Fix** |  | 2015-07-04 | 2015-07-15 |  |  |  |  |  |  |  |  |
| P7-MEP-PL-B2-1000 |  | Supports installation for High level Pipes | 12d | 2015-07-04 | 2015-07-15 | OFF-ENG-MEP-DR1100, OFF-ENG-MEP-WS1090, OFF-PRO-MEP-DR1020, P7-ST-B1-1080 FS+14d | 143d | 0d | Cash Flow [819.68 h]; Plumber [16.35 h]; Excavation [12] | 819.68 | MEP | PL & D | 1f |
|  | 3 | **2nd Fix** |  | 2015-07-04 | 2015-08-11 |  |  |  |  |  |  |  |  |
| P7-MEP-PL-B2-2000 |  | Parking Drain Installation | 6d | 2015-07-04 | 2015-07-09 | OFF-ENG-MEP-DR1100, OFF-PRO-MEP-DR1050, P7-ST-B1-1080 FS+14d, OFF-PRO-MEP-DR1080 | 192d | 27d | Cash Flow [547.83 h]; Plumber [48 h]; Excavation [6] | 547.83 | MEP | PL & D | 2f |
| P7-MEP-PL-B2-2010 |  | High Level Drainage Pipes Installation | 21d | 2015-07-16 | 2015-08-05 | P7-MEP-PL-B2-1000, OFF-PRO-MEP-DR1050, P7-ST-B1-1080 FS+14d | 150d | 0d | Cash Flow [6562.53 h]; Plumber [244.38 h]; Excavation [21] | 6,562.53 | MEP | PL & D | 2f |
| P7-MEP-PL-B2-2030 |  | High Level Water Supply Pipes and Fittings Installation | 21d | 2015-07-16 | 2015-08-05 | P7-MEP-PL-B2-1000, OFF-PRO-MEP-WS1020, OFF-PRO-MEP-WS1110, P7-ST-B1-1080 FS+14d | 143d | 0d | Cash Flow [1308.6 h]; Plumber [150.02 h]; Excavation [21] | 1,308.6 | MEP | PL & D | 2f |
| P7-MEP-PL-B2-2020 |  | Drainage Pipes Gravity Test | 6d | 2015-08-06 | 2015-08-11 | P7-MEP-PL-B2-2010, P7-MEP-PL-B2-2000, P7-ST-B1-1080 FS+14d | 165d | 0d | Cash Flow [820.24 h]; Plumber [48 h]; Excavation [6] | 820.24 | MEP | PL & D | 2f |
| P7-MEP-PL-B2-2040 |  | Water Supply Pipes Pressure Test | 6d | 2015-08-06 | 2015-08-11 | P7-MEP-PL-B2-2030, P7-ST-B1-1080 FS+14d | 158d | 36d | Cash Flow [145.74 h]; Plumber [48 h]; Excavation [6] | 145.74 | MEP | PL & D | 2f |
|  | 4 | **Final Fix** |  | 2015-08-12 | 2015-08-17 |  |  |  |  |  |  |  |  |
| P7-MEP-PL-B2-3000 |  | Manhole Covers Installation | 6d | 2015-08-12 | 2015-08-17 | P7-MEP-PL-B2-2020, P7-ST-B1-1080 FS+14d | 165d | 36d | Cash Flow [488.57 h]; Plumber [37.5 h]; Excavation [6] | 488.57 | MEP | PL & D | ff |
|  | 3 | **Fire Fighting Works** |  | 2015-07-04 | 2015-08-23 |  |  |  |  |  |  |  |  |
|  | 1 | **1st Fix** |  | 2015-07-04 | 2015-07-15 |  |  |  |  |  |  |  |  |
| P7-MEP-FF-B2-1000 |  | Supports and Hungers installation | 12d | 2015-07-04 | 2015-07-15 | OFF-ENG-MEP-FF1090, OFF-PRO-MEP-DR1020, P7-ST-B1-1080 FS+14d | 151d | 0d | Cash Flow [35.86 h]; Plumber [288 h]; Excavation [12] | 35.86 | MEP | FF | 1f |

| ID | WBS | Activity | Duration | Start | Finish | Predecessors | Total float | Free float | Resources | Cost | Responsibility | MEP Systems | Fix | MEP Steps |
| --- | --- | --- | --- | --- | --- | --- | --- | --- | --- | --- | --- | --- | --- | --- |
|  | 3 | **2nd Fix** |  | 2015-07-16 | 2015-08-11 |  |  |  |  |  |  |  |  |  |
| P7-MEP-FF-B2-2000 |  | Sprinkler Pipes and Fittings Installation | 21d | 2015-07-16 | 2015-08-05 | P7-MEP-FF-B2-1000, OFF-PRO-MEP-FF1070, P7-ST-B1-1080 FS+14d | 151d | 0d | Cash Flow [35356.3 h]; Plumber [672 h]; Excavation [21] | 35,356.33 | MEP | FF | 2f |  |
| P7-MEP-FF-B2-2010 |  | Sprinkler Pipes Pressure Test | 6d | 2015-08-06 | 2015-08-11 | P7-MEP-FF-B2-2000, P7-ST-B1-1080 FS+14d | 160d | 0d | Cash Flow [1964.24 h]; Plumber [96 h]; Excavation [6] | 1,964.24 | MEP | FF | 2f |  |
|  | 4 | **Final Fix** |  | 2015-08-12 | 2015-08-23 |  |  |  |  |  |  |  |  |  |
| P7-MEP-FF-B2-3000 |  | Sprinkler Head Installation | 12d | 2015-08-12 | 2015-08-23 | P7-MEP-FF-B2-2010, P7-ST-B1-1080 FS+14d | 160d | 30d | Plumber [576 h]; Cash Flow [4522.33 h]; Excavation [12] | 4,522.33 | MEP | FF | ff |  |
|  | 3 | **Electrical System** |  | 2015-07-04 | 2015-09-20 |  |  |  |  |  |  |  |  |  |
|  | 1 | **1st Fix** |  | 2015-07-04 | 2015-07-21 |  |  |  |  |  |  |  |  |  |
| P7-MEP-EL-B2-1010 |  | PVC Back Boxes and Conduits Fixing in Wall | 12d | 2015-07-04 | 2015-07-15 | ENGMEP8620, ENGMEP8810, ENGMEP9030, ENGMEP9190, ENGMEP9470, ENGMEP9610, PROCMEPELE1990, PROCMEPELE2080, P7-ST-B1-1080 FS+14d | 118d | 0d | Cash Flow [3307.67 h]; Electrician [384 h]; Excavation [12] | 3,307.67 | MEP | EL | 1f | 1st Fix |
| P7-MEP-EL-B2-1000 |  | DB's Inclosure Fixing | 6d | 2015-07-16 | 2015-07-21 | ENGMEP8620, ENGMEP8810, P7-ST-B1-1080 FS+14d, P7-MEP-EL-B2-1010 | 124d | 6d | Cash Flow [2130.4 h]; Electrician [96 h]; Excavation [6] | 2,130.4 | MEP | EL | 1f | 1st Fix |
|  | 2 | **2nd Fix** |  | 2015-07-16 | 2015-08-31 |  |  |  |  |  |  |  |  |  |
| P7-MEP-EL-B2-2020 |  | Lighting Wiring | 12d | 2015-07-16 | 2015-07-27 | P7-MEP-EL-B2-1010, P7-ST-B1-1080 FS+14d, P7-MEP-EL-B2-1010 FF | 118d | 0d | Cash Flow [3566.08 h]; Electrician [241.71 h]; Excavation [12] | 3,566.08 | MEP | EL | 2f | 2nd Fix |
| P7-MEP-EL-B2-2030 |  | Power Points Wiring | 12d | 2015-07-16 | 2015-07-27 | P7-MEP-EL-B2-1010, P7-ST-B1-1080 FS+14d | 146d | 21d | Cash Flow [2894.21 h]; Electrician [192 h]; Excavation [12] | 2,894.21 | MEP | EL | 2f | 2nd Fix |
| P7-MEP-EL-B2-2050 |  | Fire Alarm System Wiring | 12d | 2015-07-16 | 2015-07-27 | PROCMEPELE8650, P7-MEP-EL-B2-1010, P7-ST-B1-1080 FS+14d | 167d | 0d | Cash Flow [7111.01 h]; Electrician [192 h]; Excavation [12] | 7,111.01 | MEP | EL | 2f | 2nd Fix |
| P7-MEP-EL-B2-2060 |  | BMS System Wiring | 8d | 2015-07-16 | 2015-07-23 | PROCMEPELE9100, P7-MEP-EL-B2-1010, P7-ST-B1-1080 FS+14d | 176d | 34d | Cash Flow [15183.4 h]; Electrician [186 h]; Excavation [8] | 15,183.44 | MEP | EL | 2f | 2nd Fix |
| P7-MEP-EL-B2-2070 |  | Emergency Light Wiring | 8d | 2015-07-16 | 2015-07-23 | PROCMEPELE9330, P7-MEP-EL-B2-1010, P7-ST-B1-1080 FS+14d | 187d | 34d | Cash Flow [1202.03 h]; Electrician [128 h]; Excavation [8] | 1,202.03 | MEP | EL | 2f | 2nd Fix |
| P7-MEP-EL-B2-2000 |  | DB's Installation and Termination | 12d | 2015-07-28 | 2015-08-08 | P7-MEP-EL-B2-1000, P7-ST-B1-1080 FS+14d, P7-MEP-EL-B2-2020, PROCMEPELE8920 | 118d | 0d | Cash Flow [4970.93 h]; Electrician [288 h]; Excavation [12] | 4,970.93 | MEP | EL | 2f | 2nd Fix |
| P7-MEP-EL-B2-2040 |  | Cable Tray and Trunking Installation | 21d | 2015-07-28 | 2015-08-17 | PROCMEPELE3340, P7-ST-B1-1080 FS+14d, P7-MEP-EL-B2-2000 SS | 118d | 0d | Cash Flow [9064.45 h]; Electrician [504 h]; Excavation [21] | 9,064.45 | MEP | EL | 2f | 2nd Fix |
| P7-MEP-EL-B2-2010 |  | SMDB's Installation | 6d | 2015-08-12 | 2015-08-17 | P7-MEP-EL-B2-1010, P7-ST-B1-1080 FS+14d, P7-MEP-EL-B2-1010 FF, P7-MEP-EL-B2-2040 FF, PROCMEPELE9380 | 141d | 9d | Cash Flow [4970.93 h]; Electrician [48 h]; Excavation [6] | 4,970.93 | MEP | EL | 2f | 2nd Fix |
| P7-MEP-EL-B2-3040 |  | Power Cable Puling | 14d | 2015-08-18 | 2015-08-31 | P7-MEP-EL-B2-2040, P7-MEP-EL-B2-2020, P7-MEP-EL-B2-2030, P7-ST-B1-1080 FS+14d, P7-MEP-EL-B2-2000 | 125d | 0d | Cash Flow [13632.3 h]; Electrician [168 h]; Excavation [14] | 13,632.33 | MEP | EL | 2f | 2nd Fix |
|  | 3 | **Final Fix** |  | 2015-07-28 | 2015-09-20 |  |  |  |  |  |  |  |  |  |
| P7-MEP-EL-B2-3030 |  | Fire Alarm System Detector Installation | 12d | 2015-07-28 | 2015-08-08 | P7-MEP-EL-B2-2050, P7-ST-B1-1080 FS+14d | 167d | 30d | Cash Flow [4034.38 h]; Electrician [192 h]; Excavation [12] | 4,034.38 | MEP | EL | ff | Final F |
| P7-MEP-EL-B2-3010 |  | SMDB's Termination and Final Connection | 6d | 2015-09-01 | 2015-09-06 | P7-MEP-EL-B2-2010, P7-MEP-EL-B2-2030, P7-ST-B1-1080 FS+14d, P7-MEP-EL-B2-3040 | 131d | 0d | Cash Flow [2785.83 h]; Electrician [192 h]; Excavation [6] | 2,785.82 | MEP | EL | ff | Final F |
| P7-MEP-EL-B2-3020 |  | Lights Fitting Fixing | 14d | 2015-09-07 | 2015-09-20 | PROCMEPELE8560, P7-MEP-EL-B2-2020, P7-ST-B1-1080 FS+14d, P7-MEP-EL-B2-2040, P7-MEP-EL-B2-2060, P7-MEP-EL-B2-3010 | 131d | 0d | Cash Flow [7322.66 h]; Electrician [244 h]; Excavation [14] | 7,322.66 | MEP | EL | ff | Final F |
| P7-MEP-EL-B2-3050 |  | Sockets and Switches Fixing | 8d | 2015-09-13 | 2015-09-20 | PROCMEPELE8830, P7-MEP-EL-B2-2030, P7-ST-B1-1080 FS+14d, P7-MEP-EL-B2-3020 FF | 136d | 0d | Cash Flow [1166.96 h]; Electrician [128 h]; Excavation [8] | 1,166.96 | MEP | EL | ff | Final F |
| P7-MEP-EL-B2-3060 |  | Emergency Light Fixing | 8d | 2015-09-13 | 2015-09-20 | P7-MEP-EL-B2-3050 SS, P7-MEP-EL-B2-2070, P7-ST-B1-1080 FS+14d, P7-MEP-EL-B2-3040, P7-MEP-EL-B2-3030 | 136d | 0d | Cash Flow [5714.02 h]; Electrician [128 h]; Excavation [8] | 5,714.02 | MEP | EL | ff | Final F |
| P7-MEP-EL-B2-3000 |  | CO2 System Installation | 6d | 2015-09-15 | 2015-09-20 | P7-ST-B1-1080 FS+14d, P7-MEP-EL-B2-3050 FF | 143d | 1d | Cash Flow [21027.8 h]; Electrician [179.65 h]; Excavation [6] | 21,027.76 | MEP | EL | ff | Final F |

| ID | WBS | Activity | Duration | Start | Finish | Predecessors | Total float | Free float | Resources | Cost | Structural | Responsibility | MEP Systems | MEP Steps | Fix |
| --- | --- | --- | --- | --- | --- | --- | --- | --- | --- | --- | --- | --- | --- | --- | --- |
|  | 2 | **Basement 1** |  | 2015-05-05 | 2015-10-23 |  |  |  |  |  |  |  |  |  |  |
|  | 1 | **Structural** |  | 2015-05-05 | 2015-06-19 |  |  |  |  |  |  |  |  |  |  |
| P7-ST-B1-1000 |  | Reinforcement for Verticals | 12d | 2015-05-05 | 2015-05-18 | P7-ST-B2-1060 | 112d | 0d | MNHRS [894.2 h]; Cash Flow [110176 h]; Reinforcement [47381.3]; Excavation [12] | 110,175.68 | STR |  |  |  |  |
| P7-ST-B1-1010 |  | MEP Works in Vertical Element | 5d | 2015-05-13 | 2015-05-18 | ENGMEP8620, P7-ST-B1-1000 FF | 120d | 8d | Cash Flow [1798.55 h]; Electrician [160 h]; Excavation [5] | 1,798.55 |  | MEP | EL | B.W |  |
| P7-ST-B1-1020 |  | FW for Verticals | 8d | 2015-05-19 | 2015-05-27 | P7-ST-B1-1000 | 112d | 0d | MNHRS [17712 h]; Cash Flow [143709 h]; FW [2500.6]; Excavation [8] | 143,708.65 | STR |  |  |  |  |
| P7-ST-B1-1030 |  | Concrete Verticals | 1d | 2015-05-28 | 2015-05-28 | P7-ST-B1-1020, P7-ST-B1-1010 | 112d | 0d | MNHRS [3190.81 h]; Cash Flow [45189.6 h]; Concrete [385.5]; Excavation [1] | 45,189.6 | STR |  |  |  |  |
| P7-ST-B1-1040 |  | FW for Slab | 10d | 2015-05-30 | 2015-06-08 | P7-ST-B1-1030 | 112d | 0d | MNHRS [21904.2 h]; Cash Flow [177721 h]; FW [3092.5]; Excavation [10] | 177,721.39 | STR |  |  |  |  |
| P7-ST-B1-1060 |  | Reinforcement for Slab | 10d | 2015-06-09 | 2015-06-18 | P7-ST-B1-1040 | 112d | 0d | MNHRS [2721.8 h]; Cash Flow [335840 h]; Reinforcement [144428]; Excavation [10] | 335,840.19 | STR |  |  |  |  |
| P7-ST-B1-1070 |  | MEP Works in Slab & Beams | 5d | 2015-06-14 | 2015-06-18 | ENGMEP8620, P7-ST-B1-1060 FF | 112d | 0d | Cash Flow [3349.02 h]; Electrician [320 h]; Excavation [5] | 3,349.02 |  | MEP | EL | B.W |  |
| P7-ST-B1-1080 |  | Concrete for Slab | 1d | 2015-06-19 | 2015-06-19 | P7-ST-B1-1060, P7-ST-B1-1070 | 112d | 0d | MNHRS [7087.21 h]; Cash Flow [218115 h]; Concrete [856.25]; Excavation [1] | 218,114.99 | STR |  |  |  |  |
|  | 2 | **Fiishing** |  |  |  |  |  |  |  |  |  |  |  |  |  |
|  | 4 | **MEP Work** |  | 2015-08-15 | 2015-10-23 |  |  |  |  |  |  |  |  |  |  |
|  | 1 | **Mechanical System** |  | 2015-08-15 | 2015-10-04 |  |  |  |  |  |  |  |  |  |  |
|  | 2 | **HVAC Works** |  | 2015-08-15 | 2015-09-20 |  |  |  |  |  |  |  |  |  |  |
|  | 1 | **1st Fix** |  | 2015-08-15 | 2015-08-26 |  |  |  |  |  |  |  |  |  |  |
| P7-MEP-AC-B1-1000 |  | Supports and Hungers Fixing | 12d | 2015-08-15 | 2015-08-26 | OFF-ENG-MEP-AC1140, P7-MEP-AC-B2-1000, P7-ST-GF-1060 FS+14d | 145d | 0d | Cash Flow [17480 h]; Ductman [192 h]; Excavation [12] | 17,479.95 |  | MEP | AC |  | 1f |
|  | 3 | **2nd Fix** |  | 2015-08-27 | 2015-09-10 |  |  |  |  |  |  |  |  |  |  |
| P7-MEP-AC-B1-2000 |  | Fan's Installation | 15d | 2015-08-27 | 2015-09-10 | P7-MEP-AC-B1-1000, P7-ST-GF-1060 FS+14d, P7-MEP-AC-B2-2000 | 145d | 0d | Cash Flow [102656 h]; Ductman [134.4 h]; Excavation [15] | 102,656.42 |  | MEP | AC |  | 2f |
|  | 4 | **Final Fix** |  | 2015-09-11 | 2015-09-20 |  |  |  |  |  |  |  |  |  |  |
| P7-MEP-AC-B1-3000 |  | Grills and Diffusers Fixing | 10d | 2015-09-11 | 2015-09-20 | P7-MEP-AC-B1-2000, P7-MEP-AC-B2-3000, P7-ST-GF-1060 FS+14d | 145d | 64d | Cash Flow [157320 h]; Ductman [320 h]; Excavation [10] | 157,319.53 |  | MEP | AC |  | ff |
|  | 1 | **Plumbing and Drainage Works** |  | 2015-08-15 | 2015-09-28 |  |  |  |  |  |  |  |  |  |  |
|  | 1 | **1st Fix** |  | 2015-08-15 | 2015-08-26 |  |  |  |  |  |  |  |  |  |  |
| P7-MEP-PL-B1-1000 |  | Supports installation for High level Pipes | 12d | 2015-08-15 | 2015-08-26 | OFF-ENG-MEP-DR1110, OFF-ENG-MEP-WS1100, P7-MEP-PL-B2-1000, P7-ST-GF-1060 FS+14d | 122d | 0d | Cash Flow [819.68 h]; Plumber [16.35 h]; Excavation [12] | 819.68 |  | MEP | PL & D |  | 1f |
|  | 3 | **2nd Fix** |  | 2015-08-15 | 2015-09-22 |  |  |  |  |  |  |  |  |  |  |
| P7-MEP-PL-B1-2000 |  | Parking Drain Installation | 6d | 2015-08-15 | 2015-08-20 | OFF-ENG-MEP-DR1110, P7-MEP-PL-B2-2000, P7-ST-GF-1060 FS+14d | 156d | 27d | Cash Flow [547.83 h]; Plumber [48 h]; Excavation [6] | 547.83 |  | MEP | PL & D |  | 2f |
| P7-MEP-PL-B1-2010 |  | High Level Drainage Pipes Installation | 21d | 2015-08-27 | 2015-09-16 | P7-MEP-PL-B1-1000, P7-MEP-PL-B2-2010, P7-ST-GF-1060 FS+14d | 129d | 0d | Cash Flow [6562.53 h]; Plumber [244.38 h]; Excavation [21] | 6,562.53 |  | MEP | PL & D |  | 2f |
| P7-MEP-PL-B1-2030 |  | High Level Water Supply Pipes and Fittings Installation | 21d | 2015-08-27 | 2015-09-16 | P7-MEP-PL-B1-1000, P7-MEP-PL-B2-2030, P7-ST-GF-1060 FS+14d | 122d | 0d | Cash Flow [1308.6 h]; Plumber [150.02 h]; Excavation [21] | 1,308.6 |  | MEP | PL & D |  | 2f |
| P7-MEP-PL-B1-2020 |  | Drainage Pipes Gravity Test | 6d | 2015-09-17 | 2015-09-22 | P7-MEP-PL-B1-2010, P7-MEP-PL-B1-2000, P7-ST-GF-1060 FS+14d, P7-MEP-PL-B2-2020 | 129d | 0d | Cash Flow [820.24 h]; Plumber [48 h]; Excavation [6] | 820.24 |  | MEP | PL & D |  | 2f |
| P7-MEP-PL-B1-2040 |  | Water Supply Pipes Pressure Test | 6d | 2015-09-17 | 2015-09-22 | P7-MEP-PL-B1-2030, P7-ST-GF-1060 FS+14d, P7-MEP-PL-B2-2040 | 122d | 62d | Cash Flow [145.74 h]; Plumber [48 h]; Excavation [6] | 145.74 |  | MEP | PL & D |  | 2f |

| ID | WBS | Activity | Duration | Start | Finish | Predecessors | Total float | Free float | Resources | Cost | Responsibility | MEP Systems | Fix | MEP Steps |
| --- | --- | --- | --- | --- | --- | --- | --- | --- | --- | --- | --- | --- | --- | --- |
|  | 4 | **Final Fix** |  | 2015-09-23 | 2015-09-28 |  |  |  |  |  |  |  |  |  |
| P7-MEP-PL-B1-3000 |  | Manhole Covers Installation | 6d | 2015-09-23 | 2015-09-28 | P7-MEP-PL-B2-3000, P7-MEP-PL-B1-2020, P7-ST-GF-1060 FS+14d | 129d | 56d | Cash Flow [488.57 h]; Plumber [37.5 h]; Excavation [6] | 488.57 | MEP | PL & D | ff |  |
|  | 3 | **Fire Fighting Works** |  | 2015-08-15 | 2015-10-04 |  |  |  |  |  |  |  |  |  |
|  | 1 | **1st Fix** |  | 2015-08-15 | 2015-08-26 |  |  |  |  |  |  |  |  |  |
| P7-MEP-FF-B1-1000 |  | Supports and Hungers installation | 12d | 2015-08-15 | 2015-08-26 | OFF-ENG-MEP-FF1100, P7-MEP-FF-B2-1000, P7-ST-GF-1060 FS+14d | 130d | 0d | Cash Flow [35.86 h]; Plumber [288 h]; Excavation [12] | 35.86 | MEP | FF | 1f |  |
|  | 3 | **2nd Fix** |  | 2015-08-27 | 2015-09-22 |  |  |  |  |  |  |  |  |  |
| P7-MEP-FF-B1-2000 |  | Sprinkler Pipes and Fittings Installation | 21d | 2015-08-27 | 2015-09-16 | P7-MEP-FF-B1-1000, P7-MEP-FF-B2-2000, P7-ST-GF-1060 FS+14d | 130d | 0d | Cash Flow [35356.3 h]; Plumber [672 h]; Excavation [21] | 35,356.33 | MEP | FF | 2f |  |
| P7-MEP-FF-B1-2010 |  | Sprinkler Pipes Pressure Test | 6d | 2015-09-17 | 2015-09-22 | P7-MEP-FF-B1-2000, P7-ST-GF-1060 FS+14d | 130d | 0d | Cash Flow [1964.24 h]; Plumber [96 h]; Excavation [6] | 1,964.24 | MEP | FF | 2f |  |
|  | 4 | **Final Fix** |  | 2015-09-23 | 2015-10-04 |  |  |  |  |  |  |  |  |  |
| P7-MEP-FF-B1-3000 |  | Sprinkler Head Installation | 12d | 2015-09-23 | 2015-10-04 | P7-MEP-FF-B1-2010, P7-MEP-FF-B2-3000, P7-ST-GF-1060 FS+14d | 130d | 50d | Plumber [576 h]; Cash Flow [4522.33 h]; Excavation [12] | 4,522.33 | MEP | FF | ff |  |
|  | 3 | **Electrical System** |  | 2015-08-15 | 2015-10-23 |  |  |  |  |  |  |  |  |  |
|  | 1 | **1st Fix** |  | 2015-08-15 | 2015-09-01 |  |  |  |  |  |  |  |  |  |
| P7-MEP-EL-B1-1010 |  | PVC Back Boxes and Conduits Fixing in Wall | 12d | 2015-08-15 | 2015-08-26 | ENGMEP9620, ENGMEP9480, ENGMEP9200, ENGMEP9040, ENGMEP8820, ENGMEP8620, PROCMEPELE1990, PROCMEPELE2080, P7-ST-GF-1060 FS+14d, P7-MEP-EL-B2-1010 | 112d | 0d | Cash Flow [3307.67 h]; Electrician [384 h]; Excavation [12] | 3,307.67 | MEP | EL | 1f | 1st Fix |
| P7-MEP-EL-B1-1000 |  | DB's Inclosure Fixing | 6d | 2015-08-27 | 2015-09-01 | ENGMEP8820, ENGMEP8620, P7-ST-GF-1060 FS+14d, P7-MEP-EL-B2-1000, P7-MEP-EL-B1-1010 | 112d | 0d | Cash Flow [2130.4 h]; Electrician [96 h]; Excavation [6] | 2,130.4 | MEP | EL | 1f | 1st Fix |
|  | 2 | **2nd Fix** |  | 2015-08-18 | 2015-09-27 |  |  |  |  |  |  |  |  |  |
| P7-MEP-EL-B1-2020 |  | Cable Tray and Trunking Installation | 21d | 2015-08-18 | 2015-09-07 | PROCMEPELE3340, P7-ST-GF-1060 FS+14d, P7-MEP-EL-B2-2040 | 118d | 6d | Cash Flow [9064.45 h]; Electrician [504 h]; Excavation [21] | 9,064.45 | MEP | EL | 2f | 2nd Fix |
| P7-MEP-EL-B1-2010 |  | SMDB's , MDB's Installation | 12d | 2015-08-27 | 2015-09-07 | P7-MEP-EL-B1-1010, P7-ST-GF-1060 FS+14d, P7-MEP-EL-B2-2010 | 132d | 20d | Cash Flow [4196.6 h]; Electrician [336 h]; Excavation [12] | 4,196.6 | MEP | EL | 2f | 2nd Fix |
| P7-MEP-EL-B1-2030 |  | Fire Alarm System Wiring | 12d | 2015-08-27 | 2015-09-07 | PROCMEPELE8650, P7-MEP-EL-B1-1010, P7-ST-GF-1060 FS+14d, P7-MEP-EL-B2-2050 | 137d | 0d | Cash Flow [7111.01 h]; Electrician [192 h]; Excavation [12] | 7,111.01 | MEP | EL | 2f | 2nd Fix |
| P7-MEP-EL-B1-2040 |  | Lighting Wiring | 12d | 2015-08-27 | 2015-09-07 | PROCMEPELE5680, P7-MEP-EL-B1-1010, P7-ST-GF-1060 FS+14d, P7-MEP-EL-B2-2020 | 118d | 6d | Cash Flow [3566.08 h]; Electrician [241.71 h]; Excavation [12] | 3,566.08 | MEP | EL | 2f | 2nd Fix |
| P7-MEP-EL-B1-2050 |  | Power Points Wiring | 12d | 2015-08-27 | 2015-09-07 | PROCMEPELE5680, P7-MEP-EL-B1-1010, P7-ST-GF-1060 FS+14d, P7-MEP-EL-B2-2030 | 118d | 6d | Cash Flow [2894.21 h]; Electrician [192 h]; Excavation [12] | 2,894.21 | MEP | EL | 2f | 2nd Fix |
| P7-MEP-EL-B1-2060 |  | BMS System Wiring | 8d | 2015-08-27 | 2015-09-03 | PROCMEPELE9100, P7-MEP-EL-B1-1010, P7-ST-GF-1060 FS+14d, P7-MEP-EL-B2-2060 | 148d | 36d | Cash Flow [15183.4 h]; Electrician [186 h]; Excavation [8] | 15,183.44 | MEP | EL | 2f | 2nd Fix |
| P7-MEP-EL-B1-2070 |  | Emergency Light Wiring | 8d | 2015-08-27 | 2015-09-03 | PROCMEPELE9330, P7-MEP-EL-B1-1010, P7-ST-GF-1060 FS+14d, P7-MEP-EL-B2-2070 | 153d | 17d | Cash Flow [1202.03 h]; Electrician [128 h]; Excavation [8] | 1,202.03 | MEP | EL | 2f | 2nd Fix |
| P7-MEP-EL-B1-2000 |  | DB's Installation and Termination | 12d | 2015-09-02 | 2015-09-13 | P7-MEP-EL-B1-1000, P7-ST-GF-1060 FS+14d, P7-MEP-EL-B2-2000 | 112d | 0d | Cash Flow [4970.93 h]; Electrician [288 h]; Excavation [12] | 4,970.93 | MEP | EL | 2f | 2nd Fix |
| P7-MEP-EL-B1-3040 |  | Power Cable Puling | 14d | 2015-09-14 | 2015-09-27 | P7-MEP-EL-B1-2020, P7-MEP-EL-B1-2040, P7-MEP-EL-B1-2050, P7-ST-GF-1060 FS+14d, P7-MEP-EL-B1-2000, P7-MEP-EL-B2-3040 | 112d | 0d | Cash Flow [13632.3 h]; Electrician [168 h]; Excavation [14] | 13,632.33 | MEP | EL | 2f | 2nd Fix |

| ID | WBS | Activity | Type | Duration | Start | Finish | Predecessors | Total float | Free float | Resources | Cost | Responsibility | MEP Systems | MEP Steps | Fix | Structural | user_text8 | Difference dates | Trade-2 | Level-2 | Floor-2 | Division-2 | Sub Zone | Areas |
| --- | --- | --- | --- | --- | --- | --- | --- | --- | --- | --- | --- | --- | --- | --- | --- | --- | --- | --- | --- | --- | --- | --- | --- | --- |
|  | 3 | **Final Fix** |  |  | 2015-09-08 | 2015-10-23 |  |  |  |  |  |  |  |  |  |  |  |  |  |  |  |  |  |  |
| P7-MEP-EL-B1-3010 |  | Fire Alarm System Detector Installation |  | 12d | 2015-09-08 | 2015-09-19 | P7-MEP-EL-B1-2030, P7-ST-GF-1060 FS+14d, P7-MEP-EL-B2-3030 | 137d | 1d | Cash Flow [4034.38 h]; Electrician [192 h]; Excavation [12] | 4,034.38 | MEP | EL | Final F | ff |  |  |  |  |  |  |  |  |  |
| P7-MEP-EL-B1-3050 |  | Sockets and Switches Fixing |  | 8d | 2015-09-21 | 2015-09-28 | PROCMEPELE8830, P7-MEP-EL-B1-2050, P7-ST-GF-1060 FS+14d, P7-MEP-EL-B2-3050 | 136d | 0d | Cash Flow [1166.96 h]; Electrician [128 h]; Excavation [8] | 1,166.96 | MEP | EL | Final F | ff |  |  |  |  |  |  |  |  |  |
| P7-MEP-EL-B1-3060 |  | Emergency Light Fixing |  | 8d | 2015-09-21 | 2015-09-28 | P7-MEP-EL-B1-3050 SS, P7-MEP-EL-B1-2070, P7-ST-GF-1060 FS+14d, P7-MEP-EL-B1-3010, P7-MEP-EL-B2-3060 | 136d | 56d | Cash Flow [5714.02 h]; Electrician [128 h]; Excavation [8] | 5,714.02 | MEP | EL | Final F | ff |  |  |  |  |  |  |  |  |  |
| P7-MEP-EL-B1-3000 |  | CO2 System Installation |  | 6d | 2015-09-22 | 2015-09-27 | P7-ST-GF-1060 FS+14d, P7-MEP-EL-B1-3040 FF, P7-MEP-EL-B2-3000 | 142d | 57d | Cash Flow [21027.8 h]; Electrician [179.65 h]; Excavation [6] | 21,027.76 | MEP | EL | Final F | ff |  |  |  |  |  |  |  |  |  |
| P7-MEP-EL-B1-3030 |  | SMDB's , MDB's Termination and Final Connection |  | 12d | 2015-09-28 | 2015-10-09 | P7-MEP-EL-B1-2010, P7-MEP-EL-B1-2050, P7-ST-GF-1060 FS+14d, P7-MEP-EL-B1-3040, P7-MEP-EL-B2-3010 | 112d | 0d | Cash Flow [20725.6 h]; Electrician [384 h]; Excavation [12] | 20,725.64 | MEP | EL | Final F |  |  |  |  |  |  |  |  |  |  |
| P7-MEP-EL-B1-3020 |  | Lights Fitting Fixing |  | 14d | 2015-10-10 | 2015-10-23 | PROCMEPELE8560, P7-MEP-EL-B1-2040, P7-ST-GF-1060 FS+14d, P7-MEP-EL-B1-2060, P7-MEP-EL-B1-3030, P7-MEP-EL-B2-3020 | 112d | 74d | Cash Flow [7322.66 h]; Electrician [244 h]; Excavation [14] | 7,322.66 | MEP | EL | Final F | ff |  |  |  |  |  |  |  |  |  |
|  | 4 | **Ground Floor** |  |  | 2015-06-20 | 2015-07-31 |  |  |  |  |  |  |  |  |  |  |  |  |  |  |  |  |  |  |
|  | 1 | **Structural** |  |  | 2015-06-20 | 2015-07-31 |  |  |  |  |  |  |  |  |  |  |  |  |  |  |  |  |  |  |
| P7-ST-GF-1000 |  | Reinforcement for Verticals |  | 12d | 2015-06-20 | 2015-07-01 | P7-ST-B1-1080 | 112d | 0d | MNHRS [894.2 h]; Cash Flow [110176 h]; Reinforcement [47381.3]; Excavation [12] | 110,175.68 |  |  |  |  | STR |  |  |  |  |  |  |  |  |
| P7-ST-GF-1010 |  | FW for Verticals |  | 8d | 2015-07-02 | 2015-07-09 | P7-ST-GF-1000 | 112d | 0d | MNHRS [17712 h]; Cash Flow [143709 h]; FW [2500.6]; Excavation [8] | 143,708.65 |  |  |  |  | STR |  |  |  |  |  |  |  |  |
| P7-ST-GF-1020 |  | Concrete Verticals |  | 1d | 2015-07-10 | 2015-07-10 | P7-ST-GF-1010 | 112d | 0d | MNHRS [3190.81 h]; Cash Flow [45189.6 h]; Concrete [385.5]; Excavation [1] | 45,189.6 |  |  |  |  | STR |  |  |  |  |  |  |  |  |
| P7-ST-GF-1030 |  | FW for Slab |  | 10d | 2015-07-11 | 2015-07-20 | P7-ST-GF-1020 | 112d | 0d | MNHRS [21904.2 h]; Cash Flow [177721 h]; FW [3092.5]; Excavation [10] | 177,721.39 |  |  |  |  | STR |  |  |  |  |  |  |  |  |
| P7-ST-GF-1050 |  | Reinforcement for Slab |  | 10d | 2015-07-21 | 2015-07-30 | P7-ST-GF-1030 | 112d | 0d | MNHRS [2721.8 h]; Cash Flow [335840 h]; Reinforcement [144428]; Excavation [10] | 335,840.19 |  |  |  |  | STR |  |  |  |  |  |  |  |  |
| P7-ST-GF-1060 |  | Concrete for Slab |  | 1d | 2015-07-31 | 2015-07-31 | P7-ST-GF-1050 | 112d | 0d | MNHRS [7087.21 h]; Cash Flow [218115 h]; Concrete [856.25]; Excavation [1] | 218,114.99 |  |  |  |  | STR |  |  |  |  |  |  |  |  |
|  | 2 | **Fiishing** |  |  |  |  |  |  |  |  |  |  |  |  |  |  |  |  |  |  |  |  |  |  |
|  | 6 | **Provisional Sums** |  |  | 2015-08-14 | 2016-03-08 |  |  |  |  |  |  |  |  |  |  |  |  |  |  |  |  |  |  |
| PS100 |  | Extension of MEP to & inside Offices |  | 90d | 2015-08-14 | 2015-11-11 | BL1-FN-7F-1000, BL2-FN-9F-1000, BL3-FN-11F-1000 FF+17d | 33d | 0d | Cash Flow [2500000 h]; Excavation [90] | 2,500,000 |  |  |  |  |  |  |  |  |  |  |  |  |  |
| PS110 |  | Floor Finishes inside Offices |  | 60d | 2015-11-12 | 2016-01-10 | PS100 | 33d |  | Cash Flow [3500000 h]; Excavation [60] | 3,500,000 |  |  |  |  |  |  |  |  |  |  |  |  |  |
| PS120 |  | Permanent Utilities |  | 25d | 2016-02-13 | 2016-03-08 | PS110, AUTH-DR-100 SS-22d, AUTH-WS-100 SS, AUTH-FF-100 SS-40d, AUTH-EL-100 SS | 0d |  | Cash Flow [1000000 h]; Excavation [25] | 1,000,000 |  |  |  |  |  |  |  |  |  |  |  |  |  |
|  | 6 | **Project Handing Over** |  |  | 2015-11-24 | 2016-03-31 |  |  |  |  |  |  |  |  |  |  |  |  |  |  |  |  |  |  |
|  | 1 | **Authority Approvals** |  |  | 2015-11-24 | 2016-03-31 |  |  |  |  |  |  |  |  |  |  |  |  |  |  |  |  |  |  |
|  | 1 | **Drainage** |  |  | 2016-03-06 | 2016-03-23 |  |  |  |  |  |  |  |  |  |  |  |  |  |  |  |  |  |  |
| AUTH-DR-100 |  | Ready to Tie In / Ready to Connect to Main Drainage Network |  | 1d | 2016-03-06 | 2016-03-06 | T&C-BL1-110, T&C-BL2-110, T&C-BL3-100, AUTH-WS-110 | 0d |  | Excavation [1] |  | MEP |  |  |  |  | 0 | 0 | MEP | ME | GEN | Auth | Gen | ALL |
| AUTH-DR-110 |  | Connection of Drainage line to Main Network |  | 5d | 2016-03-07 | 2016-03-11 | AUTH-DR-100 | 8d | 0d | Excavation [5] |  | MEP |  |  |  |  | 0 | 0 | MEP | ME | GEN | Auth | Gen | ALL |
| AUTH-DR-120 |  | Inspection of Drainage System By Authority |  | 12d | 2016-03-12 | 2016-03-23 | AUTH-DR-110 | 8d | 0d | Excavation [12] |  | MEP |  |  |  |  | 0 | 0 | MEP | ME | GEN | Auth | Gen | ALL |
| AUTH-DR-130 |  | Drainage Permanent Connection Available | milestone | 0d | 2016-03-23 | 2016-03-23 | AUTH-DR-140 FF | 8d |  |  |  | MEP |  |  |  |  | 0 | 0 | MEP | ME | GEN | Auth | Gen | ALL |
| AUTH-DR-140 |  | Obtain Authority Approval | milestone | 0d | 2016-03-23 | 2016-03-23 | AUTH-DR-120 FF | 8d | 0d |  |  | MEP |  |  |  |  | 0 | 0 | MEP | ME | GEN | Auth | Gen | App |

| ID | WBS | Activity | Type | Duration | Start | Finish | Predecessors | Total float | Free float | Calendar | Resources | Cost | user_text8 | Difference dates | Responsibility | Trade-2 | Level-2 | Floor-2 | Division-2 | Sub Zone | Areas | MEP Systems | Fix |
| --- | --- | --- | --- | --- | --- | --- | --- | --- | --- | --- | --- | --- | --- | --- | --- | --- | --- | --- | --- | --- | --- | --- | --- |
|  | 2 | **Water Supply** |  |  | 2016-01-11 | 2016-03-19 |  |  |  |  |  |  |  |  |  |  |  |  |  |  |  |  |  |
| AUTH-WS-100 |  | Ready to Tie In / Ready to Connect to Main Water Supply Network |  | 1d | 2016-01-11 | 2016-01-11 | T&C-BL1-120, T&C-BL2-120 | 33d |  |  | Excavation [1] |  | 0 | 0 | MEP | MEP | ME | GEN | Auth | Gen | ALL |  |  |
| AUTH-WS-110 |  | Connection to the Main Network |  | 5d | 2016-03-01 | 2016-03-05 | AUTH-WS-100, T&C-BL3-110 | 0d |  |  | Excavation [5] |  | 0 | 0 | MEP | MEP | ME | GEN | Auth | Gen | ALL |  |  |
| AUTH-WS-120 |  | Inspection of Water Supply System By Authority |  | 14d | 2016-03-06 | 2016-03-19 | AUTH-WS-110 | 0d |  |  | Excavation [14] |  | 0 | 0 | MEP | MEP | ME | GEN | Auth | Gen | ALL |  |  |
| AUTH-WS-130 |  | Water Supply Permanent Connection Available | milestone | 0d | 2016-03-19 | 2016-03-19 | AUTH-WS-140 FF | 0d |  |  |  |  | 0 | 0 | MEP | MEP | ME | GEN | Auth | Gen | ALL |  |  |
| AUTH-WS-140 |  | Obtain Authority Approval | milestone | 0d | 2016-03-19 | 2016-03-19 | AUTH-WS-120 FF | 0d |  |  |  |  | 0 | 0 | MEP | MEP | ME | GEN | Auth | Gen | App |  |  |
|  | 3 | **Fire Fighting** |  |  | 2016-03-20 | 2016-03-31 |  |  |  |  |  |  |  |  |  |  |  |  |  |  |  |  |  |
| AUTH-FF-100 |  | Inspection of Fire Fighting System By Authority |  | 12d | 2016-03-20 | 2016-03-31 | T&C-BL1-100, T&C-BL2-100, T&C-BL3-120, AUTH-WS-130 | 0d |  |  | Excavation [12] |  | 0 | 0 | MEP | MEP | ME | GEN | Auth | Gen | ALL |  |  |
| AUTH-FF-110 |  | Approval Of Fire Fighting System By Authority | milestone | 0d | 2016-03-31 | 2016-03-31 | AUTH-FF-100 | 0d |  |  |  |  | 0 | 0 | MEP | MEP | ME | GEN | Auth | Gen | App |  |  |
|  | 4 | **Electrical** |  |  | 2015-11-24 | 2016-01-26 |  |  |  |  |  |  |  |  |  |  |  |  |  |  |  |  |  |
| AUTH-EL-100 |  | Temperaty Power On for Testing & Commissioning | milestone | 0d | 2015-11-24 | 2015-11-24 | BL1-MEP-EL-6F-2070, BL2-MEP-EL-8F-2070, BL3-MEP-EL-10F-2070, BL1-MEP-EL-7F-3050 | 56d | 0d |  |  |  | 0 | 0 | MEP | MEP | EL | GEN | Auth | Gen | ALL |  |  |
| AUTH-EL-110 |  | Ready for Initial Inspection By Authority |  | 5d | 2015-12-29 | 2016-01-02 | BL2-MEP-EL-9F-3010, BL1-MEP-EL-7F-3060, BL3-MEP-EL-10F-3010 | 42d | 0d |  | Excavation [5] |  | 0 | 0 | MEP | MEP | EL | GEN | Auth | Gen | ALL |  |  |
| AUTH-EL-120 |  | Authority Initial Inspection |  | 14d | 2016-01-03 | 2016-01-16 | AUTH-EL-110 | 42d | 0d |  | Excavation [14] |  | 0 | 0 | MEP | MEP | EL | GEN | Auth | Gen | ALL |  |  |
| AUTH-EL-130 |  | Authority Final Inspection |  | 10d | 2016-01-17 | 2016-01-26 | AUTH-EL-120 | 42d | 0d |  | Excavation [10] |  | 0 | 0 | MEP | MEP | EL | GEN | Auth | Gen | ALL |  |  |
| AUTH-EL-140 |  | Power On | milestone | 0d | 2016-01-26 | 2016-01-26 | AUTH-EL-130 | 42d | 0d |  |  |  | 0 | 0 | MEP | MEP | EL | GEN | Auth | Gen | ALL |  |  |
|  | 2 | **Testing and Commissioning** |  |  | 2015-11-24 | 2016-03-31 |  |  |  |  |  |  |  |  |  |  |  |  |  |  |  |  |  |
|  | 2 | **Block1** |  |  | 2015-11-24 | 2016-01-26 |  |  |  |  |  |  |  |  |  |  |  |  |  |  |  |  |  |
| T&C-BL1-100 |  | Fire Fighting System T & C |  | 21d | 2015-11-24 | 2015-12-14 | BL1-MEP-FF-6F-3010, BL1-MEP-FF-7F-3000, BL1-MEP-RZR-120, P4-MEP-EL-B1-3000, P4-MEP-EL-B2-3000, P5-MEP-EL-B2-3000, P5-MEP-EL-B1-3000, P6-MEP-EL-B2-3000, P6-MEP-EL-B1-3000, P7-MEP-EL-B2-3000, P7-MEP-EL-B1-3000, P4-MEP-EL-B2-3060, P4-MEP-EL-B1-3060, P5-MEP-EL-B2-3060, P5-MEP-EL-B1-3060, P6-MEP-EL-B2-3060, P6-MEP-EL-B1-3060, P7-MEP-EL-B2-3060, P7-MEP-EL-B1-3060, BL1-MEP-FF-B1-2010, AUTH-EL-100, P4-MEP-FF-B1-3000, P5-MEP-FF-B1-3000, P6-MEP-FF-B1-3000, P7-MEP-FF-B1-3000, P4-MEP-EL-B2-3070, BL1-MEP-FF-6F-3000 | 85d |  |  | Cash Flow [10749.9 h]; Plumber [832 h]; Excavation [21] | 10,749.94 |  |  | MEP |  |  |  |  |  |  | FF | ff |
| T&C-BL1-110 |  | Drainage System T & C |  | 21d | 2015-11-24 | 2015-12-14 | BL1-MEP-PL-B2-3010, BL1-MEP-PL-B2-2020, BL1-MEP-PL-B2-2050, BL1-MEP-PL-B1-3000, BL1-MEP-PL-6F-3000, BL1-MEP-PL-7F-3000, BL1-MEP-PL-7F-3010, GEN1040, BL1-MEP-RZR-100, P6-MEP-PL-B1-3000, P7-MEP-PL-B1-3000, P4-MEP-PL-B1-3000, P5-MEP-PL-B1-3000, BL1-MEP-PL-6F-2010, P7-MEP-PL-B1-2020, P6-MEP-PL-B1-2020, P5-MEP-PL-B1-2020, P4-MEP-PL-B1-2020, AUTH-EL-100 | 82d |  |  | Cash Flow [12846.9 h]; Plumber [932.66 h]; Excavation [21] | 12,846.94 |  |  | MEP |  |  |  |  |  |  | PL & D | ff |
| T&C-BL1-120 |  | Water Supply System T & C |  | 21d | 2015-11-24 | 2015-12-14 | BL1-MEP-PL-B2-3010, BL1-MEP-PL-B2-2050, BL1-MEP-PL-B2-2040, BL1-MEP-PL-B1-2040, BL1-MEP-PL-GF-2040, BL1-MEP-PL-6F-3000, BL1-MEP-PL-6F-3010, GEN1040, BL1-MEP-RZR-130, P7-MEP-PL-B1-2040, P4-MEP-PL-B1-2040, P6-MEP-PL-B1-2040, P5-MEP-PL-B1-2040, AUTH-EL-100 | 60d | 27d |  | Cash Flow [11308.1 h]; Plumber [932.66 h]; Excavation [21] | 11,308.1 |  |  | MEP |  |  |  |  |  |  | PL & D | ff |
| T&C-BL1-130 |  | AC System T & C |  | 21d | 2015-11-24 | 2015-12-14 | BL1-MEP-AC-7F-2000, BL1-MEP-AC-7F-2010, BL1-MEP-AC-7F-2020, BL1-MEP-AC-7F-2030, BL1-MEP-AC-7F-2040, BL1-MEP-AC-7F-2080, BL1-MEP-AC-7F-2090, BL1-MEP-AC-7F-2100, BL1-MEP-AC-6F-2040, BL1-MEP-AC-6F-2060, BL1-MEP-AC-6F-3000, BL1-MEP-AC-7F-2070, BL1-MEP-RZR-110, BL1-MEP-RZR-140, P4-MEP-AC-B1-3000, P5-MEP-AC-B1-3000, P6-MEP-AC-B1-3000, P7-MEP-AC-B1-3000, AUTH-EL-100, T&C-BL1-150 SS | 85d |  |  | Cash Flow [52788.2 h]; Pipe Fitter - CHW [8 h]; Ductman [8 h]; Excavation [21] | 52,788.18 |  |  | MEP |  |  |  |  |  |  | AC | ff |
| T&C-BL1-150 |  | Flushing for Chilled Water Pipes |  | 30d | 2015-11-24 | 2015-12-28 | BL1-MEP-AC-7F-2010, BL1-MEP-AC-7F-2100, BL1-MEP-RZR-110, AUTH-EL-100 | 61d | 0d | EMIRAL ALGERIA | Excavation [30] |  |  |  |  |  |  |  |  |  |  |  |  |
| T&C-BL1-140 |  | Electrical System T & C |  | 21d | 2016-01-06 | 2016-01-26 | BL1-MEP-EL-7F-3060, BL1-MEP-EL-7F-3040, BL1-MEP-EL-7F-3000, BL1-MEP-EL-7F-2000, BL1-SUBST-GF-1300, AUTH-EL-100, AUTH-EL-140 FF, BL1-LFT-10, P4-MEP-EL-B1-3020, P5-MEP-EL-B1-3020, P6-MEP-EL-B1-3020, P7-MEP-EL-B1-3020 | 42d |  |  | Cash Flow [47560 h]; Electrician [1008 h]; Excavation [21] | 47,560.03 |  |  | MEP |  |  |  |  |  |  | EL | ff |
|  | 4 | **Testing and Commissioning** |  |  |  |  |  |  |  |  |  |  |  |  |  |  |  |  |  |  |  |  |  |
|  | 1 | **Block2** |  |  | 2015-12-11 | 2016-02-12 |  |  |  |  |  |  |  |  |  |  |  |  |  |  |  |  |  |
| T&C-BL2-110 |  | Drainage System T & C |  | 25d | 2015-12-11 | 2016-01-04 | BL2-MEP-PL-B2-2050, BL2-MEP-PL-B1-2040, BL2-MEP-PL-GF-2040, BL2-MEP-PL-8F-2040, BL2-MEP-PL-8F-3000, BL2-MEP-PL-B1-3000, BL2-MEP-PL-9F-3000, BL2-MEP-PL-9F-3010, GEN1040, BL2-MEP-RZR-100, P6-MEP-PL-B1-3000, P7-MEP-PL-B1-3000, P4-MEP-PL-B1-3000, P5-MEP-PL-B1-3000, AUTH-EL-100 | 61d |  |  | Cash Flow [12868.9 h]; Plumber [1060.66 h]; Excavation [25] | 12,868.91 |  |  | MEP |  |  |  |  |  |  | PL & D | ff |
| T&C-BL2-100 |  | Fire Fighting System T & C |  | 25d | 2015-12-14 | 2016-01-07 | BL2-MEP-FF-8F-3010, BL2-MEP-RZR-120, BL2-MEP-FF-9F-3000, P4-MEP-EL-B1-3060, P5-MEP-EL-B1-3060, P6-MEP-EL-B1-3060, P7-MEP-EL-B1-3060, AUTH-EL-100, P7-MEP-FF-B1-3000, P6-MEP-FF-B1-3000, P5-MEP-FF-B1-3000, P4-MEP-FF-B1-3000, BL2-MEP-FF-8F-3000 | 61d |  |  | Cash Flow [10749.9 h]; Plumber [1024 h]; Excavation [25] | 10,749.94 |  |  | MEP |  |  |  |  |  |  | FF | ff |
| T&C-BL2-120 |  | Water Supply System T & C |  | 25d | 2015-12-17 | 2016-01-10 | BL2-MEP-PL-B2-2050, BL2-MEP-PL-8F-3000, BL2-MEP-PL-8F-3010, GEN1040, BL2-MEP-RZR-130, BL2-MEP-PL-8F-2020, AUTH-EL-100 | 33d | 0d |  | Cash Flow [11308.1 h]; Plumber [1060.66 h]; Excavation [25] | 11,308.1 |  |  | MEP |  |  |  |  |  |  | PL & D | ff |
| T&C-BL2-130 |  | AC System T & C |  | 25d | 2015-12-29 | 2016-01-22 | BL2-MEP-AC-9F-2000, BL2-MEP-AC-9F-2010, BL2-MEP-AC-9F-2020, BL2-MEP-AC-9F-2030, BL2-MEP-AC-9F-2040, BL2-MEP-AC-9F-2080, BL2-MEP-AC-9F-2090, BL2-MEP-AC-9F-2100, BL2-MEP-AC-8F-3000, BL2-MEP-AC-8F-2070, BL2-MEP-AC-9F-2070, BL2-MEP-RZR-110, BL2-MEP-RZR-140, P5-MEP-AC-B1-3000, P6-MEP-AC-B1-3000, P7-MEP-AC-B1-3000, AUTH-EL-100, T&C-BL2-160 SS, P4-MEP-AC-B1-3000 | 46d |  |  | Cash Flow [53007.5 h]; Pipe Fitter - CHW [8 h]; Ductman [8 h]; Excavation [25] | 53,007.47 |  |  | MEP |  |  |  |  |  |  | AC | ff |
| T&C-BL2-160 |  | Flushing for Chilled Water Pipes |  | 30d | 2015-12-29 | 2016-02-01 | BL2-MEP-RZR-110, BL2-MEP-AC-9F-2010, BL2-MEP-AC-9F-2100 | 31d | 0d | EMIRAL ALGERIA | Excavation [30] |  |  |  |  |  |  |  |  |  |  |  |  |
| T&C-BL2-140 |  | Electrical System T & C |  | 25d | 2016-01-19 | 2016-02-12 | BL2-MEP-EL-9F-3010, BL2-MEP-EL-9F-3060, BL1-SUBST-GF-1300, AUTH-EL-100, AUTH-EL-140 FF, P4-MEP-EL-B1-3020, P5-MEP-EL-B1-3020, P6-MEP-EL-B1-3020, P7-MEP-EL-B1-3020, BL2-MEP-EL-8F-3000 | 25d |  |  | Cash Flow [47560 h]; Electrician [1200 h]; Excavation [25] | 47,560.03 |  |  | MEP |  |  |  |  |  |  | EL | ff |

| ID | WBS | Activity | Duration | Start | Finish | Predecessors | Total float | Free float | Calendar | Resources | Cost | Responsibility | MEP Systems | Fix |
| --- | --- | --- | --- | --- | --- | --- | --- | --- | --- | --- | --- | --- | --- | --- |
|  | 4 | **Testing and Commissioning** |  |  |  |  |  |  |  |  |  |  |  |  |
|  | 3 | **Block3** |  | 2016-01-25 | 2016-03-31 |  |  |  |  |  |  |  |  |  |
| T&C-BL3-100 |  | Drainage System T & C | 30d | 2016-01-25 | 2016-02-23 | BL3-MEP-PL-B2-2040, BL3-MEP-PL-B2-2050, BL3-MEP-PL-B1-2040, BL3-MEP-PL-GF-2040, BL3-MEP-PL-B1-3000, GEN1040, BL3-MEP-PL-10F-2030, BL3-MEP-PL-10F-2040, BL3-MEP-PL-10F-3000, BL3-MEP-PL-11F-3010, BL3-MEP-PL-11F-3020, BL3-MEP-RZR-100, P6-MEP-PL-B1-3000, P7-MEP-PL-B1-3000, P4-MEP-PL-B1-3000, P5-MEP-PL-B1-3000, AUTH-EL-100 | 11d |  |  | Cash Flow [12868.9 h]; Plumber [1220.66 h]; Excavation [30] | 12,868.91 | MEP | PL & D | ff |
| T&C-BL3-110 |  | Water Supply System T & C | 30d | 2016-01-31 | 2016-02-29 | BL3-MEP-PL-B2-2050, GEN1040, BL3-MEP-PL-10F-2020, BL3-MEP-PL-10F-3000, BL3-MEP-PL-10F-3010, BL3-MEP-RZR-110, AUTH-EL-100 | 0d |  |  | Cash Flow [11308.1 h]; Plumber [1220.6 h]; Excavation [30] | 11,308.1 | MEP | PL & D | ff |
| T&C-BL3-120 |  | Fire Fighting System T & C | 30d | 2016-02-06 | 2016-03-06 | BL3-MEP-FF-11F-3000, BL3-MEP-RZR-140, P4-MEP-EL-B1-3060, P5-MEP-EL-B1-3060, P6-MEP-EL-B1-3060, P7-MEP-EL-B1-3060, BL3-MEP-EL-B1-3020, AUTH-EL-100, P4-MEP-FF-B1-3000, P5-MEP-FF-B1-3000, P6-MEP-FF-B1-3000, P7-MEP-FF-B1-3000, BL3-MEP-FF-9F-3010 | 6d |  |  | Cash Flow [10749.9 h]; Plumber [1264 h]; Excavation [30] | 10,749.94 | MEP | FF | ff |
| T&C-BL3-170 |  | Flushing for Chilled Water Pipes | 30d | 2016-02-20 | 2016-03-24 | BL3-MEP-AC-11F-2020, BL3-MEP-AC-11F-2090, BL3-MEP-RZR-130 | 6d | 8d | EMIRAL ALGERIA | Excavation [30] |  |  |  |  |
| T&C-BL3-130 |  | AC System T & C | 30d | 2016-02-29 | 2016-03-29 | BL3-MEP-AC-10F-2070, BL3-MEP-AC-10F-3000, BL3-MEP-AC-11F-2000, BL3-MEP-AC-11F-2020, BL3-MEP-AC-11F-2030, BL3-MEP-AC-11F-2040, BL3-MEP-AC-11F-2050, BL3-MEP-AC-11F-2070, BL3-MEP-AC-11F-2080, BL3-MEP-AC-11F-2090, BL3-MEP-AC-11F-2100, BL3-MEP-RZR-130, BL3-MEP-RZR-120, P5-MEP-AC-B1-3000, P6-MEP-AC-B1-3000, P7-MEP-AC-B1-3000, AUTH-EL-100, T&C-BL3-170 SS, P4-MEP-AC-B1-3000 | 2d |  |  | Cash Flow [53007.5 h]; Pipe Fitter - CHW [8 h]; Ductman [8 h]; Excavation [30] | 53,007.47 | MEP | AC | ff |
| T&C-BL3-140 |  | Electrical System T & C | 30d | 2016-03-02 | 2016-03-31 | BL1-SUBST-GF-1300, BL3-MEP-EL-11F-3040, BL3-MEP-EL-11F-3060, AUTH-EL-100, AUTH-EL-140 FF, P4-MEP-EL-B1-3020, P5-MEP-EL-B1-3020, P6-MEP-EL-B1-3020, P7-MEP-EL-B1-3020 | 0d |  |  | Cash Flow [47560 h]; Electrician [1440 h]; Excavation [30] | 47,560.03 | MEP | EL | ff |
|  | 4 | **Testing and Commissioning** |  |  |  |  |  |  |  |  |  |  |  |  |
|  | 3 | **As Built Drawing and O&M Manuals** |  | 2016-03-02 | 2016-03-27 |  |  |  |  |  |  |  |  |  |
| DWG100 |  | As Built Drawings and O&M Manuals Handing Over | 22d | 2016-03-02 | 2016-03-27 | SNAG100 SS-6d | 4d |  | EMIRAL ALGERIA | Excavation [22] |  |  |  |  |
|  | 4 | **Snagging & Desnagging** |  | 2016-03-09 | 2016-03-31 |  |  |  |  |  |  |  |  |  |
| SNAG100 |  | Snagging & Desnagging List | 20d | 2016-03-09 | 2016-03-31 | T&C-BL3-140 SS, T&C-BL3-130 SS, BL3-FN-11F-1070, BL3-FN-11F-1060, PS120, PS110, PS100, BL1-FN-7F-1090, BL1-FN-B1-1100, BL1-FN-B2-1100, BL1-FN-B1-1100 FF, BL1-FN-GF-1100, BL1-FN-1F-1100, BL1-FN-2F-1100, BL1-FN-3F-1100, BL1-FN-4F-1100, BL1-FN-5F-1100, BL1-FN-6F-1100, BL1-FN-7F-1090 FF, BL2-FN-B2-1100, BL2-FN-B1-1100, BL2-FN-GF-1100, BL2-FN-1F-1100, BL2-FN-2F-1100, BL2-FN-3F-1100, BL2-FN-4F-1100, BL2-FN-5F-1100, BL2-FN-6F-1100, BL2-FN-7F-1100, BL2-FN-8F-1100, BL2-FN-9F-1090, BL3-FN-B2-1100, BL3-FN-B1-1100, BL3-FN-GF-1100, BL3-FN-1F-1100, BL3-FN-2F-1100, BL3-FN-3F-1100, BL3-FN-4F-1100, BL3-FN-5F-1100, BL3-FN-6F-1100, BL3-FN-7F-1100, BL3-FN-8F-1100, BL3-FN-9F-1100, BL3-FN-10F-1100, BL3-FN-11F-1060 FF, T&C-BL2-160, T&C-BL2-140, T&C-BL2-130, T&C-BL2-120, T&C-BL2-110, T&C-BL2-100, T&C-BL3-170 SS, T&C-BL3-120 FS-3d, T&C-BL3-110, T&C-BL3-100, T&C-BL1-150, T&C-BL1-140, T&C-BL1-130, T&C-BL1-120, T&C-BL1-110, T&C-BL1-100, BL1-FN-7F-1100, P4-ST-GF-1060, P5-ST-GF-1060, P6-ST-GF-1060, P7-ST-GF-1060 | 0d |  | EMIRAL ALGERIA | Excavation [20] |  |  |  |  |

## Activity codes

| Code | Value | Meaning |
| --- | --- | --- |
| Areas | ALL | All Areas |
| Areas | App | Approval |
| Areas | PLANT | Plant Rooms |
| Bldg | T1 | Tower 1 |
| Division-2 | Auth | Authority Approvals |
| Division-2 | Const | Construction Works |
| Engineering | Arch | Architectural |
| Engineering | Str | Structural |
| Facade | FCD | Facade |
| Finishing | FIN | Finishing |
| Fix | 1f | First FIx |
| Fix | 2f | Second Fix |
| Fix | ff | Final Fix |
| Floor-2 | B1 | Basement 1 ( Parking ) |
| Floor-2 | GEN | General |
| Level 7 | SS | Sub Station |
| Level-2 | EL | Electrical |
| Level-2 | ME | Mechanical |
| MEP Steps | 1st Fix | 1 |
| MEP Steps | 2nd Fix | 2 |
| MEP Steps | B.W | Builders Work |
| MEP Steps | Final F | 3 |
| MEP Systems | AC | HVAC System |
| MEP Systems | EL | Electrical System |
| MEP Systems | FF | Fire Fighting System |
| MEP Systems | PL & D | Plumbing and Drainage System |
| Procurement | Arch | Architectural |
| Responsibility | MEP | MEP CONTRACTOR |
| Structural | STR | Structural |
| Sub Zone | Gen | General Area |
| Sub Zone | T02 | Tower 2 Area |
| Trade-2 | MEP | MEP Installations |
