# CCAD CPM Rev.3 dt 24-Oct-2011 (Subcontractor Copy)

Schedule from Primavera P6, 2010-03-07 to 2092-10-21, data date 2011-09-30, costs in EGP, A marks actual dates.
Must finish by 2013-07-04

| ID | WBS | Activity | Duration | Start | Finish | Predecessors | Complete | Remaining | Planned start | Planned finish | Total float | Free float | Resources | Cost | Actual cost | Change Order # | NEW ACTIVITY ID | change id | RENZ % COMPLETE | Claimed This Month | CCAD BUILDING(SET) | CCAD PHASE(SET) | CCAD FLOOR(SET) | CCAD ZONE(SET) | CCAD WORK(SET) | CCAD SECTION(SET) | CCAD SERIAL No.(SET) | CCAD CBS(SET) | CCAD BILL(SET) | CCAD HANDOVER(SET) | CCAD TAG(SET) | CCAD REV(SET) | CCADACF (SET) | CCAD CSA | CCAD SSCF | Act Selector % | user_number8 | user_integer1 | user_integer2 | user_number7 | P_811 | P_711 | July2011 Target% Complete | CCAD SUB ZONE MEP(SET) | U% | CCAD DIVISION(SET) | CCAD MEQ |
| --- | --- | --- | --- | --- | --- | --- | --- | --- | --- | --- | --- | --- | --- | --- | --- | --- | --- | --- | --- | --- | --- | --- | --- | --- | --- | --- | --- | --- | --- | --- | --- | --- | --- | --- | --- | --- | --- | --- | --- | --- | --- | --- | --- | --- | --- | --- | --- |
|  | 06 | **Corridor, Public area (Lobby , Royal Entry)** |  | 2011-05-03 | 2012-12-15 |  |  |  |  |  |  |  |  |  |  |  |  |  |  |  |  |  |  |  |  |  |  |  |  |  |  |  |  |  |  |  |  |  |  |  |  |  |  |  |  |  |  |
| D01PA09201C0 |  | DT-01 ; Metal Studs (Public Area) | 90d | 2011-05-03 A | 2011-12-07 | D01PA23001C0 SS+12d | 40% | 54d | 2011-06-16 | 2011-10-03 | 19d | 0d | PARTITIONS; PARTITIONS - Metal Studs [136 m]; Cost |  |  | 313 | 944 | DGLPA09201C0 | 20 | 2335.59 | DT | C | 01 | PA | PT | 092 | 01 | BILL 5 | B05 | S1 | 1F | R00 | ACF06 | GP | 092 | PMS |  |  |  |  |  |  |  |  |  |  |  |
| D01PA09203C0 |  | DT-01 ; Partitions early wall & 1st face (Public Area) | 90d | 2011-05-16 A | 2011-12-24 | D01PA09201C0 SS+12d | 25% | 67.5d | 2011-07-02 | 2011-10-17 | 53.5d | 34.5d | PARTITIONS [136 m]; PARTITIONS [467 h]; Cost |  |  | 314 | 945 | DGLPA09203C0 | 2 | 8500.48 | DT | C | 01 | PA | PT | 092 | 03 | BILL 5 | B05 | S1 | 2F | R00 | ACF06 | GP | 092 | P1F | 0 | 0 | 0 | 0 | 20 | 17 |  |  |  |  |  |
| D01PA23001C0 |  | DT-01 ; 1st Fix, Inst. of Supports for MEP (Public Area) | 90d | 2011-06-01 A | 2011-11-24 | D01S107807C0, D01S207807C0, D01S307807C0 | 50% | 45d | 2011-06-01 | 2011-09-18 | 19d | 0d | MECHANICAL [1338 h]; Cost [75432.9 AED] | 75,432.94 | 37,716.47 |  |  | DGLPA23001C0 |  | 8750.22 | DT | C | 01 | PA | ME | 230 | 01 | BILL 5 | B05 | S1 | 1F | R00 | ACF04 | MEP | 230 | M1F |  |  |  |  |  |  | 50 | 1S |  |  |  |
| D01PA26013C0 |  | DT-01 ; 1st Fix, Inst of Cable Tray (Public Area) | 72d | 2011-06-08 A | 2011-12-25 | D01PA23001C0 SS, D01PA27010C0 SS+10d, D01S107807C0, D01S207807C0, D01S307807C0 | 5% | 68.4d | 2011-07-31 | 2011-10-25 | 112.4d | 0d | ELECTRICAL [430.8 h]; Cost [23263.3 AED] | 23,263.34 | 1,163.17 |  |  | DGLPA26013C0 |  | 1350.09 | DT | C | 01 | PA | ME | 260 | 13 | BILL 5 | B05 | S1 | 1F | R00 | ACF04 | MEP | 260 | M1F |  |  |  |  |  |  | 25 | 1S |  |  |  |
| D01PA26001C0 |  | DT-01 ; 1st Fix, Inst of Trunking/Conduiting (Public Area) | 72d | 2011-06-14 A | 2011-12-25 | D01PA23001C0 SS, D01S107807C0, D01S207807C0, D01S307807C0 | 5% | 68.4d | 2011-07-03 | 2011-09-27 | 52.6d | 0d | ELECTRICAL [824.4 h]; Cost [42423.2 AED] | 42,423.24 | 2,121.16 |  |  | DGLPA26001C0 |  | 2499.33 | DT | C | 01 | PA | ME | 260 | 01 | BILL 5 | B05 | S1 | 1F | R00 | ACF04 | MEP | 260 | M1F |  |  |  |  |  |  | 25 | 1S |  |  |  |
| D01PA27010C0 |  | DT-01 ; 1st Fix, Inst of Trunking for ELV system (Public Area) | 72d | 2011-06-14 A | 2011-12-25 | D01PA23001C0 SS, D01PA26001C0 SS+14d, D01S107807C0, D01S207807C0, D01S307807C0 | 5% | 68.4d | 2011-07-19 | 2011-10-13 | 52.6d | 0d | ELECTRICAL [1689.6 h]; Cost [88597.9 AED] | 88,597.89 | 4,429.89 |  |  | DGLPA27010C0 |  | 5139.21 | DT | C | 01 | PA | ME | 270 | 10 | BILL 5 | B05 | S1 | 1F | R00 | ACF04 | MEP | 270 | M1F |  |  |  |  |  |  | 25 | 1S |  |  |  |
| D01PA21111C0 |  | DT-01 ; 1st Fix, Inst of Sprinkler main pipe (Public Area) | 72d | 2011-07-10 A | 2011-12-25 | D01PA22019C0 SS, D01PA23001C0 SS | 5% | 68.4d | 2011-08-09 | 2011-11-03 | 78.8d | 0d | MECHANICAL [981.6 h]; Cost [53543.7 AED] | 53,543.69 | 2,677.18 |  |  | DGLPA21111C0 |  |  | DT | C | 01 | PA | ME | 211 | 11 | BILL 5 | B05 | S1 | 1F | R00 | ACF04 | MEP | 211 | M1F |  |  |  |  |  |  | 25 | 1S |  |  |  |
| D01PA21117C0 |  | DT-01 ; 1st Fix, Inst of Sprinkler branch pipe (Public Area) | 72d | 2011-07-10 A | 2012-03-15 | D01PA09201C0, D01PA21111C0 | 5% | 68.4d | 2011-10-03 | 2012-01-02 | 92d | 58.2d | MECHANICAL [1441.2 h]; Cost [78749.8 AED] | 78,749.79 | 3,937.49 |  |  | DGLPA21117C0 |  |  | DT | C | 01 | PA | ME | 211 | 17 | BILL 5 | B05 | S1 | 1F | R00 | ACF04 | MEP | 211 | M1F |  |  |  |  |  |  | 20 | 1S |  |  |  |
| D01PA22005C0 |  | DT-01 ; 1st Fix, Inst of Water supply pipe (ceiling) (Public Area) | 72d | 2011-07-10 A | 2011-12-25 | D01PA22019C0 SS+7d, D01PA23001C0 SS | 5% | 68.4d | 2011-08-06 | 2011-10-31 | 52.6d | 33.6d | PLUMBING [4896 h]; Cost [264473 AED] | 264,473.49 | 13,223.67 |  |  | DGLPA22005C0 |  |  | DT | C | 01 | PA | ME | 220 | 05 | BILL 5 | B05 | S1 | 1F | R00 | ACF04 | MEP | 220 | M1F |  |  |  |  |  |  | 25 | 1S |  |  |  |
| D01PA22019C0 |  | DT-01 ; 1st Fix, Inst of Drainage pipe (ceiling) (Public Area) | 72d | 2011-07-10 A | 2011-12-25 | D01PA23001C0 SS, D01PA27010C0 SS | 5% | 68.4d | 2011-07-28 | 2011-10-23 | 52.6d | 0d | PLUMBING [1173.6 h]; Cost [61888.2 AED] | 61,888.15 | 3,094.41 |  |  | DGLPA22019C0 |  |  | DT | C | 01 | PA | ME | 220 | 19 | BILL 5 | B05 | S1 | 1F | R00 | ACF04 | MEP | 220 | M1F |  |  |  |  |  |  | 25 | 1S |  |  |  |
| D01PA23017C0 |  | DT-01 ; 1st Fix, Inst of CHW pipe (Public Area) | 72d | 2011-08-10 A | 2011-12-25 | D01PA21111C0 SS, D01PA23001C0 SS | 5% | 68.4d | 2011-08-23 | 2011-11-21 | 78.8d | 0d | MECHANICAL [6325.2 h]; Cost [345418 AED] | 345,418.28 | 17,270.91 |  |  | DGLPA23017C0 |  |  | DT | C | 01 | PA | ME | 230 | 17 | BILL 5 | B05 | S1 | 1F | R00 | ACF04 | MEP | 230 | M1F |  |  |  |  |  |  | 25 | 1S |  |  |  |
| D01PA09501C0 |  | DT-01 ; Ceiling Grid and Service Tile (Public Area) | 36d | 2011-09-05 A | 2012-05-31 | D01PA09205C0 SS+15d, D01PA21117C0, D01PA23008C0, D01PA23009C0, D01PA23015C0, D01PA27001C0, D01PA23011C0, D01PA09901C0 | 80% | 7.2d | 2012-04-24 | 2012-06-04 | 33.8d | 0d | CEILING GRID FOR GYPSUM [17390.8 h]; CEILING GRID FOR GYPSUM [1487.81 m2]; Cost |  |  | 323 | 952 | DGLPA09501C0 |  |  | DT | C | 01 | PA | CE | 095 | 01 | BILL 5 | B05 | S1 | 01 | R00 | ACF06 |  | 095 |  |  |  |  |  |  |  |  |  | 50 |  |  |
| D01PA23023C0 |  | DT-01 ; 1st Fix, Inst of Main Ducting (Public Area) | 84d | 2011-11-27 | 2012-03-06 | D01PA23001C0, D01PA23017C0 SS+7d |  |  |  |  | 33.8d | 0d | MECHANICAL [11402.4 h]; Cost |  |  |  |  | DGLPA23023C0 |  |  | DT | C | 01 | PA | ME | 230 | 23 | BILL 5 | B05 | S1 | 1F | R00 | ACF04 | MEP | 230 | M1F |  |  |  |  |  |  | 20 | 1S |  |  |  |
| D01PA08103C0 |  | DT-01 ; Door Frames (Public Area) | 42d | 2011-12-08 | 2012-01-26 | D01PA09201C0, GNHE08101C0 FS+79d |  |  |  |  | 61d | 42d | ASSORTED DOORS [679 h]; Cost |  |  | 316 | 947 | DGLPA08103C0 |  |  | DT | C | 01 | PA | DO | 081 | 03 | BILL 5 | B05 | S1 | DF | R00 | ACF06 |  | 081 |  |  |  |  |  |  |  |  |  |  | 08 |  |
| D01PA22011C0 |  | DT-01 ; 2nd Fix, Drainage/Water pipe (wall) (Public Area) | 36d | 2011-12-08 | 2012-01-19 | D01PA09201C0 |  |  |  |  | 25d | 6d | PLUMBING [1173.6 h]; Cost |  |  |  |  | DGLPA22011C0 |  |  | DT | C | 01 | PA | ME | 220 | 11 | BILL 5 | B05 | S1 | 2F | R00 | ACF07 | MEP | 220 |  |  |  |  |  |  |  | 25 | 2n |  |  |  |
| D01PA26009C0 |  | DT-01 ; 2nd Fix, Inst of Wall conduites (Public Area) | 36d | 2011-12-08 | 2012-01-19 | D01PA09201C0 |  |  |  |  | 25d | 6d | ELECTRICAL [824.4 h]; Cost |  |  |  |  | DGLPA26009C0 |  |  | DT | C | 01 | PA | ME | 260 | 09 | BILL 5 | B05 | S1 | 2F | R00 | ACF07 | MEP | 260 |  |  |  |  |  |  |  | 25 | 2n |  |  |  |
| D01PA40302C0 |  | DT-01 ; 2nd Fix, Pneumatic tube (Public Area) | 42d | 2011-12-08 | 2012-01-26 | D01PA09201C0 |  |  |  |  | 19d | 0d | MECHANICAL [5653.2 h]; Cost |  |  |  |  | C03E140302C0 |  |  | DT | C | 01 | PA | ME | 403 | 02 | BILL 5 | B05 | S1 | 2F | R00 | ACF07 | MEP | 403 |  |  |  |  |  |  |  | 25 | 2n |  |  |  |
| D01PA23009C0 |  | DT-01 ; 2nd Fix, Inst of VAV'S CHW connection (Public Area) | 36d | 2011-12-25 | 2012-02-07 | D01PA23017C0 |  |  |  |  | 82.4d | 24.6d | MECHANICAL [1684.8 h]; Cost |  |  |  |  | DGLPA23009C0 |  |  | DT | C | 01 | PA | ME | 230 | 09 | BILL 5 | B05 | S1 | 2F | R00 | ACF07 | MEP | 230 |  |  |  |  |  |  |  | 20 | 2n |  |  |  |
| D01PA27001C0 |  | DT-01 ; 1st Fix, Wiring/ Cabling work (Public Area) | 48d | 2011-12-25 | 2012-02-21 | D01PA26001C0, D01PA26013C0, D01PA27010C0 |  |  |  |  | 112.4d | 78.6d | ELECTRICAL [436.8 h]; Cost |  |  |  |  | DGLPA27001C0 |  |  | DT | C | 01 | PA | ME | 270 | 01 | BILL 5 | B05 | S1 | 1F | R00 | ACF04 | MEP | 270 | M1F |  |  |  |  |  |  | 20 | 1S |  |  |  |
| D01PA01005C0 |  | DT-01 ; 2nd, Wall Inspection by Consultant (Public Area) | 6d | 2012-01-28 | 2012-02-02 | D01PA22011C0, D01PA26009C0, D01PA40302C0 |  |  |  |  | 19d | 0d | Labor General [1.2 h]; Cost |  |  |  |  | DGLPA01005C0 |  |  | DT | C | 01 | PA | ME | 010 | 05 | BILL 5 | B05 | S1 | WI | R00 | ACF07 | MEP | 010 |  |  |  |  |  |  |  | 25 | 2n |  |  |  |
| D01PA09205C0 |  | DT-01 ; Partitions Closing (Public Area) | 36d | 2012-02-05 | 2012-03-17 | D01PA01005C0, D01PA09203C0, D01PA22005C0, D01PA22019C0, DAFOA09206C1 FF, D01PA08103C0 FF |  |  |  |  | 19d | 0d | PARTITIONS [136 m]; PARTITIONS [597 h]; Cost |  |  | 315 | 946 | DGLPA09205C0 |  |  | DT | C | 01 | PA | PT | 092 | 05 | BILL 5 | B05 | S1 | FF | R00 | ACF06 | GP | 092 | P2F |  |  |  |  |  |  |  |  |  |  |  |
| D01PA23008C0 |  | DT-01 ; 1st Fix, Inst of VCD's/FD's (Public Area) | 66d | 2012-03-07 | 2012-05-22 | D01PA23023C0 |  |  |  |  | 33.8d | 0d | MECHANICAL [4312.8 h]; Cost |  |  |  |  | DGLPA23008C0 |  |  | DT | C | 01 | PA | ME | 230 | 08 | BILL 5 | B05 | S1 | 1F | R00 | ACF04 | MEP | 230 | M1F |  |  |  |  |  |  |  | 1S |  |  |  |
| D01PA23015C0 |  | DT-01 ; 2nd Fix, Insulation of CHW pipe & Duct (Public Area) | 42d | 2012-03-07 | 2012-04-24 | D01PA23009C0, D01PA23017C0, D01PA23023C0 |  |  |  |  | 57.8d | 24d | MECHANICAL [5311.2 h]; Cost |  |  |  |  | DGLPA23015C0 |  |  | DT | C | 01 | PA | ME | 230 | 15 | BILL 5 | B05 | S1 | 2F | R00 | ACF07 | MEP | 230 |  |  |  |  |  |  |  |  | 2n |  |  |  |
| D01PA09901C0 |  | DT-01 ; Wall Prime & 1st coat (Public Area) | 30d | 2012-03-18 | 2012-04-21 | D01CO04003C0, D01PA09205C0, D01CO04455C0 FF |  |  |  |  | 60.8d | 0d | ASSORTED WALL FINISH [17 h]; Cost |  |  | 328 | 956 | DGLPA09901C0 |  |  | DT | C | 01 | PA | PA | 099 | 01 | BILL 5 | B05 | S1 | 01 | R00 | ACF06 |  | 099 |  |  |  |  |  |  |  |  |  |  |  |  |
| D01PA23011C0 |  | DT-01 ; 2nd Fix, Inst of Equipment (FCU,FAN) (Public Area) | 42d | 2012-03-18 | 2012-05-05 | D01PA09205C0 |  |  |  |  | 48.8d | 15d | MECHANICAL [1588.8 h]; Cost |  |  |  |  | DGLPA23011C0 |  |  | DT | C | 01 | PA | ME | 230 | 11 | BILL 5 | B05 | S1 | 2F | R00 | ACF04 | MEP | 230 |  |  |  |  |  |  |  |  | 2n |  |  | H |
| D01PA26005C0 |  | DT-01 ; 2nd Fix, Wiring for Power/Lighting/Emergency (Public Area) | 36d | 2012-03-18 | 2012-04-28 | D01PA09205C0 |  |  |  |  | 98d | 0d | ELECTRICAL [436.8 h]; Cost |  |  |  |  | DGLPA26005C0 |  |  | DT | C | 01 | PA | ME | 260 | 05 | BILL 5 | B05 | S1 | 2F | R00 | ACF07 | MEP | 260 |  |  |  |  |  |  |  |  | 2n |  |  |  |
| D01PA26007C0 |  | DT-01 ; 2nd Fix, Cable Pulling (Public Area) | 42d | 2012-03-18 | 2012-05-05 | D01PA09201C0, D01PA09205C0 |  |  |  |  | 146d | 112.2d | ELECTRICAL [6634.8 h]; Cost |  |  |  |  | DGLPA26007C0 |  |  | DT | C | 01 | PA | ME | 260 | 07 | BILL 5 | B05 | S1 | 2F | R00 | ACF07 | MEP | 260 |  |  |  |  |  |  |  |  | 2n |  |  |  |
| D01PA26011C0 |  | DT-01 ; 2nd Fix, Inst of Equipment (DB) (Public Area) | 48d | 2012-03-18 | 2012-05-12 | D01PA09205C0 |  |  |  |  | 92d | 58.2d | ELECTRICAL [4054.8 h]; Cost |  |  |  |  | DGLPA26011C0 |  |  | DT | C | 01 | PA | ME | 260 | 11 | BILL 5 | B05 | S1 | 2F | R00 | ACF04 | MEP | 260 |  |  |  |  |  |  |  |  | 2n |  |  | E |
| D01PA26053C0 |  | DT-01 ; 2nd Fix, Wiring / Cabling (Public Area) | 36d | 2012-03-18 | 2012-04-28 | D01PA26009C0, D01PA09205C0 |  |  |  |  | 152d | 118.2d | ELECTRICAL [436.8 h]; Cost |  |  | 389 | 977 | DGLPA26053C0 |  |  | DT | C | 01 | PA | ME | 260 | 53 | BILL 5 | B05 | S1 | 2F | R00 | ACF07 | MEP | 260 |  |  |  |  |  |  |  |  | 2n |  |  |  |
| D01PA05501C0 |  | DT-01 ; Handrails & balustrade (Public Area) | 36d | 2012-04-22 | 2012-06-02 | D01PA09901C0, DAFT805509C0, DAFT905509C0, DAFT305509C0, DAFT105509C0, DAFT1005509C0, DAFT505509C0 |  |  |  |  | 125d | 12d | SECONDARY STEEL [119 h]; Cost |  |  |  |  | DGLPA05501C0 |  |  | DT | C | 01 | PA | SW | 055 | 01 | BILL 5 | B05 | S1 | 01 | R00 | ACF03 |  | a |  |  |  |  |  |  |  |  |  |  |  |  |
| D01PA09601C0 |  | DT-01 ; Flooring (Rubber & etc) (Public Area) | 48d | 2012-04-22 | 2012-06-17 | D01PA09205C0, D01PA09901C0, D01PA05501C0 FF |  |  |  |  | 113d | 0d | RUBBER FLOOR [8 h]; RUBBER FLOOR [12 m2]; Cost |  |  | 326 | 955 | DGLPA09601C0 |  |  | DT | C | 01 | PA | FF | 096 | 01 | BILL 5 | B05 | S1 | 03 | R00 | ACF06 |  | RF |  |  |  |  |  |  |  |  |  |  |  |  |
| D01PA26015C0 |  | DT-01 ; Final Fix, Termination & Gladding of Cables (Public Area) | 48d | 2012-04-29 | 2012-06-24 | D01PA26005C0 |  |  |  |  | 98d | 64.2d | ELECTRICAL [368.4 h]; Cost |  |  |  |  | DGLPA26015C0 |  |  | DT | C | 01 | PA | ME | 260 | 15 | BILL 5 | B05 | S1 | FF | R00 | ACF07 | MEP | 260 |  |  |  |  |  |  |  |  | FF |  |  |  |
| D01PA09905C0 |  | DT-01 ; Ceiling Prime & 1st coat (Public Area) | 30d | 2012-05-31 | 2012-07-07 | D01PA09501C0 |  |  |  |  | 110.8d | 0d | ASSORTED CEILING FINISH [92 h]; Cost |  |  | 330 | 958 | DGLPA09905C0 |  |  | DT | C | 01 | PA | PA | 099 | 05 | BILL 5 | B05 | S1 | 01 | R00 | ACF06 |  | 099 |  |  |  |  |  |  |  |  |  |  |  |  |
| D01PA21115C0 |  | DT-01 ; 2nd Fix, Inst of Sprinkler droppers (Public Area) | 36d | 2012-05-31 | 2012-07-14 | D01PA09501C0 |  |  |  |  | 33.8d | 0d | MECHANICAL [2067.6 h]; Cost |  |  |  |  | DGLPA21115C0 |  |  | DT | C | 01 | PA | ME | 211 | 15 | BILL 5 | B05 | S1 | 2F | R00 | ACF07 | MEP | 211 |  |  |  |  |  |  |  |  | 2n |  |  |  |
| D01PA23021C0 |  | DT-01 ; 2nd Fix, Inst of Flexible Duct & Plenum boxes (Public Area) | 36d | 2012-05-31 | 2012-07-14 | D01PA09205C0, D01PA09501C0 |  |  |  |  | 51.8d | 0d | MECHANICAL [274.8 h]; Cost |  |  |  |  | DGLPA23021C0 |  |  | DT | C | 01 | PA | ME | 230 | 21 | BILL 5 | B05 | S1 | 2F | R00 | ACF07 | MEP | 230 |  |  |  |  |  |  |  |  | 2n |  |  |  |
| D01PA26017C0 |  | DT-01 ; Final Fix, Inst of Ceiling rose (Public Area) | 48d | 2012-05-31 | 2012-07-28 | D01PA09501C0 |  |  |  |  | 62.8d | 0d | ELECTRICAL [67.2 h]; Cost |  |  |  |  | DGLPA26017C0 |  |  | DT | C | 01 | PA | ME | 260 | 17 | BILL 5 | B05 | S1 | FF | R00 | ACF07 | MEP | 260 |  |  |  |  |  |  |  |  | FF |  |  |  |
| D01PA27002C0 |  | DT-01 ; 2nd Fix, Wiring Droppers (Public Area) | 36d | 2012-05-31 | 2012-07-14 | D01PA09501C0 |  |  |  |  | 57.8d | 0d | ELECTRICAL [436.8 h]; Cost |  |  |  |  | DGLPA27002C0 |  |  | DT | C | 01 | PA | ME | 270 | 02 | BILL 5 | B05 | S1 | 2F | R00 | ACF07 | MEP | 270 |  |  |  |  |  |  |  |  | 2n |  |  |  |
| D01PA27020C0 |  | DT-01 ; 2nd Fix, Inst of ELV Equipment (Panels) (Public Area) | 42d | 2012-05-31 | 2012-07-21 | D01PA09205C0, D01PA09501C0 |  |  |  |  | 33.8d | 0d | ELECTRICAL [1723.2 h]; Cost |  |  |  |  | DGLPA27020C0 |  |  | DT | C | 01 | PA | ME | 270 | 20 | BILL 5 | B05 | S1 | 2F | R00 | ACF04 | MEP | 270 |  |  |  |  |  |  |  |  | 2n |  |  | E |
| D01PA40303C0 |  | DT-01 ; Final Fix, Pneumatic Station (Public Area) | 48d | 2012-05-31 | 2012-07-28 | D01PA09501C0 |  |  |  |  | 69.8d | 36d | MECHANICAL [5653.2 h]; Cost |  |  |  |  | C03E140303C0 |  |  | DT | C | 01 | PA | ME | 403 | 03 | BILL 5 | B05 | S1 | FF | R00 | ACF07 | MEP | 403 |  |  |  |  |  |  |  |  | FF |  |  |  |
| D01PA23019C0 |  | DT-01 ; Final Fix, Inst of Grilles & Diffusers (Public Area) | 60d | 2012-06-07 | 2012-08-18 | D01PA09501C0, D01PA23021C0 SS+6d |  |  |  |  | 51.8d | 18d | MECHANICAL [2560.8 h]; Cost |  |  |  |  | DGLPA23019C0 |  |  | DT | C | 01 | PA | ME | 230 | 19 | BILL 5 | B05 | S1 | FF | R00 | ACF07 | MEP | 230 |  |  |  |  |  |  |  |  | FF |  |  |  |
| D01PA27030C0 |  | DT-01 ; Final Fix, Inst of ELV device (Detector/Speaker) (Public Area) | 54d | 2012-06-07 | 2012-08-11 | D01PA09501C0, D01PA27002C0 SS+6d |  |  |  |  | 57.8d | 24d | ELECTRICAL [2152.8 h]; Cost |  |  |  |  | DGLPA27030C0 |  |  | DT | C | 01 | PA | ME | 270 | 30 | BILL 5 | B05 | S1 | FF | R00 | ACF07 | MEP | 270 |  |  |  |  |  |  |  |  | FF |  |  |  |
| D01PA26003C0 |  | DT-01 ; Final Fix, Inst of Light fittings (Public Area) | 48d | 2012-06-09 | 2012-08-05 | D01PA09501C0, D01PA26017C0 SS+7d |  |  |  |  | 62.8d | 29d | ELECTRICAL [6626.4 h]; Cost |  |  |  |  | DGLPA26003C0 |  |  | DT | C | 01 | PA | ME | 260 | 03 | BILL 5 | B05 | S1 | FF | R00 | ACF07 | MEP | 260 |  |  |  |  |  |  |  |  | FF |  |  |  |
| D01PA08107C0 |  | DT-01 ; Doors (Public Area) | 24d | 2012-06-18 | 2012-07-15 | D01PA08103C0, D01PA09901C0, D01PA09601C0 |  |  |  |  | 113d | 0d | ASSORTED DOORS [1261 h]; Cost |  |  | 317 | 948 | DGLPA08107C0 |  |  | DT | C | 01 | PA | DO | 081 | 07 | BILL 5 | B05 | S1 | DR | R00 | ACF06 |  | 081 |  |  |  |  |  |  |  |  |  |  | 08 |  |
| D01PA09903C0 |  | DT-01 ; Wall Final Paint (Public Area) | 30d | 2012-07-07 | 2012-08-11 | D01PA09901C0, D01PA09905C0 |  |  |  |  | 110.8d | 60d | ASSORTED WALL FINISH [9 h]; Cost |  |  | 329 | 957 | DGLPA09903C0 |  |  | DT | C | 01 | PA | PA | 099 | 03 | BILL 5 | B05 | S1 | 02 | R00 | ACF06 |  | 099 |  |  |  |  |  |  |  |  |  |  |  |  |
| D01PA21113C0 |  | DT-01 ; Final Fix, Inst of Sprinklers head/ Extinguisher (Public Area) | 48d | 2012-07-14 | 2012-09-10 | D01PA09501C0, D01PA21115C0 |  |  |  |  | 33.8d | 0d | MECHANICAL [403.2 h]; Cost |  |  |  |  | DGLPA21113C0 |  |  | DT | C | 01 | PA | ME | 211 | 13 | BILL 5 | B05 | S1 | FF | R00 | ACF07 | MEP | 211 |  |  |  |  |  |  |  |  | FF |  |  |  |
| D01PA08709C0 |  | DT-01 ; Ironmongery (Public Area) | 20d | 2012-07-16 | 2012-08-07 | D01PA08107C0 |  |  |  |  | 113d | 79.2d | IRONMONGERY [158 h]; Cost |  |  | 322 | 951 | DGLPA08709C0 |  |  | DT | C | 01 | PA | DO | 087 | 09 | BILL 5 | B05 | S1 | IM | R00 | ACF06 |  | 087 |  |  |  |  |  |  |  |  |  |  | 08 |  |
| D01PA09701C0 |  | DT-01 ; Wall finishes (ST, WD, WC) (Public Area) | 48d | 2012-07-21 | 2012-09-17 | D01PA26011C0, D01PA27020C0, DP15414225C0, TVT0114211C0, TVT0214211C0, TVT1214211C0, TVT3114211C0, TVT3214255C0, TVT3314245C0 |  |  |  |  | 33.8d | 0d | ASSORTED WALL FINISH [3473 h]; ASSORTED WALL FINISH [3993 m2]; Cost |  |  | 105 | 1002 | DGLPA09701C0 |  |  | DT | C | 01 | PA | WF | 097 | 01 | BILL 5 | B05 | S1 | 01 | R00 | ACF06 |  | 097 |  |  |  |  |  |  |  |  |  |  |  |  |
| D01PA01006C0 |  | DT-01 ; 2nd, Ceiling Inspection by Consultants (Public Area) | 6d | 2012-09-10 | 2012-09-17 | D01PA21115C0, D01PA23009C0, D01PA23011C0, D01PA23015C0, D01PA27002C0, D01PA09501C0, D01AR26041C0, D01AR26039C0, D01AR26043C0, D01AR26047C0, D01AR26045C0, D01PA21113C0, D01PA23019C0, D01PA26003C0, D01PA26017C0, D01PA27030C0, D01PA40303C0, D01PA26015C0 |  |  |  |  | 33.8d | 0d | Labor General [1.2 h]; Cost |  |  |  |  | DGLPA01006C0 |  |  | DT | C | 01 | PA | ME | 010 | 06 | BILL 5 | B05 | S1 | CI | R00 | ACF07 | MEP | 010 |  |  |  |  |  |  |  |  | 2n |  |  |  |
| D01PA09503C0 |  | DT-01 ; Ceiling closure - ACT/Gypsum (Public Area) | 20d | 2012-09-17 | 2012-10-10 | D01PA01006C0, D01PA21115C0, D01PA26005C0, D01PA27001C0, D01PA27002C0, DAFOA09505C1 FF, D01PA09701C0, D01PA23021C0, D01PA26053C0, D01PA26007C0 |  |  |  |  | 33.8d | 0d | ASSORTED CEILING FINISH [3522.72 h]; CEILING GYPSUM [487.9 h]; ASSORTED CEILING FINISH [5728 m2]; CEILING GYPSUM [1488 m2]; Cost |  |  | 324 | 953 | DGLPA09503C0 |  |  | DT | C | 01 | PA | CE | 095 | 03 | BILL 5 | B05 | S1 | 02 | R00 | ACF06 |  | 095 |  |  |  |  |  |  |  |  |  |  |  |  |
| D01PA11001C0 |  | DT-01 ; Wall Protection (WP, CG, WG, FCG) (Public Area) | 24d | 2012-09-17 | 2012-10-15 | D01PA09701C0, D01PA09903C0 SS |  |  |  |  | 56.8d | 23d | FF&E [581 h]; Cost |  |  | 326 | 1001 | DGLPA11001C0 |  |  | DT | C | 01 | PA | WF | 110 | 01 | BILL 5 | B05 | S1 | 03 | R00 | ACF08 |  | b |  |  |  |  |  |  |  |  |  |  |  |  |
| D01PA11009C0 |  | DT-01 ; Signage (Public Area) | 13.5d | 2012-09-17 | 2012-10-02 | D01PA09701C0 |  |  |  |  | 67.3d | 33.5d | SIGNAGES [440 h]; SIGNAGES [439.68 no]; Cost |  |  | 322 | 951 | DGLPA11009C0 |  |  | DT | C | 01 | PA | SA | 110 | 09 | BILL 5 | B05 | S1 | 09 | R00 | ACF08 |  | c |  |  |  |  |  |  |  |  |  |  | 08 |  |
| D01PA09907C0 |  | DT-01 ; Ceiling Final paint (Public Area) | 18d | 2012-10-10 | 2012-11-03 | D01PA09601C0, D01PA09905C0, D01PA09503C0 |  |  |  |  | 42.8d | 9d | ASSORTED CEILING FINISH [50 h]; Cost |  |  | 331 | 959 | DGLPA09907C0 |  |  | DT | C | 01 | PA | PA | 099 | 07 | BILL 5 | B05 | S1 | 02 | R00 | ACF06 |  | 099 |  |  |  |  |  |  |  |  |  |  |  |  |
| D01PA26019C0 |  | DT-01 ; Final Fix, Inst of Switch/Sockets (Public Area) | 18d | 2012-10-10 | 2012-11-03 | D01PA09901C0, D01PA09503C0 |  |  |  |  | 33.8d | 0d | ELECTRICAL [610.8 h]; Cost |  |  |  |  | DGLPA26019C0 |  |  | DT | C | 01 | PA | ME | 260 | 19 | BILL 5 | B05 | S1 | FF | R00 | ACF07 | MEP | 260 |  |  |  |  |  |  |  |  | FF |  |  |  |

| ID | WBS | Activity | Type | Duration | Start | Finish | Predecessors | Complete | Remaining | Planned start | Planned finish | Total float | Free float | Resources | change id | CCAD BUILDING(SET) | CCAD PHASE(SET) | CCAD FLOOR(SET) | CCAD ZONE(SET) | CCAD WORK(SET) | CCAD SECTION(SET) | CCAD SERIAL No.(SET) | CCAD CBS(SET) | CCAD BILL(SET) | CCAD HANDOVER(SET) | CCAD TAG(SET) | CCAD REV(SET) | CCADACF (SET) | CCAD SSCF | RENZ % COMPLETE | Actual Cost | Phase | Area/ Department | Grids | Are | Weight & Nos | Process | Levels | CCAD CSA | Claimed This Month | N_% | P_811 | P_711 | user_number8 | user_integer1 | user_integer2 | user_number7 |
| --- | --- | --- | --- | --- | --- | --- | --- | --- | --- | --- | --- | --- | --- | --- | --- | --- | --- | --- | --- | --- | --- | --- | --- | --- | --- | --- | --- | --- | --- | --- | --- | --- | --- | --- | --- | --- | --- | --- | --- | --- | --- | --- | --- | --- | --- | --- | --- |
|  | 10 | **Precommissioning Tesing & snagging (Lobby , Royal Entry)** |  |  | 2012-11-03 | 2012-12-15 |  |  |  |  |  |  |  |  |  |  |  |  |  |  |  |  |  |  |  |  |  |  |  |  |  |  |  |  |  |  |  |  |  |  |  |  |  |  |  |  |  |
| D01TS01807C0 |  | DT-01 ; MEP de-snag, FIREM sign-off |  | 9d | 2012-11-03 | 2012-11-13 | D01PA26015C0, D01PA21113C0, D01PA23019C0, D01PA26017C0, D01PA26003C0, D01PA27030C0, D01PA40303C0, D01PA26019C0 |  |  |  |  | 33.8d | 0d | TESTING & COMMISSIONING [1275 h]; Cost | D01TS01801C0 | DT | C | 01 | TS | SC | 018 | 01 | BILL 5 | B05 | S1 | 01 | R00 | ACF07 | 018 |  |  |  |  |  |  |  |  |  |  |  |  |  |  |  |  |  |  |
| D01TS01812C0 |  | DT-01 ; Touch-up & Clean / JV inspection /CIR /De-snag |  | 18d | 2012-11-13 | 2012-12-06 | D01PA08709C0, D01PA09601C0, D01PA09701C0, D01PA09903C0, D01PA09907C0, D01PA11001C0, D01PA11009C0, D01TS01807C0, D01PA05501C0, D01PA09503C0 |  |  |  |  | 33.8d | 0d | TESTING & COMMISSIONING [213 h]; Cost | D01TS01802C0 | DT | C | 01 | TS | SC | 018 | 02 | BILL 5 | B05 | S1 | 02 | R00 | ACF07 | 018 |  |  |  |  |  |  |  |  |  |  |  |  |  |  |  |  |  |  |
| D01TS01817C0 |  | DT-01 ; Consultant's final de-snag inspection |  | 7d | 2012-12-06 | 2012-12-15 | D01TS01812C0, D01TS01813C0 |  |  |  |  | 33.8d | 0d | Labor General [1 h]; Cost | D01TS01803C0 | DT | C | 01 | TS | SC | 018 | 03 | BILL 5 | B05 | S1 | 03 | R00 | ACF07 | 018 |  |  |  |  |  |  |  |  |  |  |  |  |  |  |  |  |  |  |
|  | 02 | **Level 2** |  |  | 2010-09-14 | 2012-12-22 |  |  |  |  |  |  |  |  |  |  |  |  |  |  |  |  |  |  |  |  |  |  |  |  |  |  |  |  |  |  |  |  |  |  |  |  |  |  |  |  |  |
|  | 01 | **Structure & Envelopment** |  |  | 2010-09-14 | 2012-07-25 |  |  |  |  |  |  |  |  |  |  |  |  |  |  |  |  |  |  |  |  |  |  |  |  |  |  |  |  |  |  |  |  |  |  |  |  |  |  |  |  |  |
| D02SA03301C0 |  | DT-02 ; Corewall concrete (Zone SA) |  | 6d | 2010-09-14 A | 2010-10-04 A | D01SA03301C0 | 100% |  | 2010-08-30 | 2010-09-06 |  |  | CONCRETE [11016 h]; CONCRETE [277 m3]; Cost | D02SA03301C0 | DT | C | 02 | SA | CT | 033 | 01 | BILL 5 | B05 | S2 | 04 | R00 | ACF03 | 033 | 100 |  |  |  |  |  |  |  |  |  |  |  |  |  |  |  |  |  |
| D02SB03303C0 |  | DT-02 ; Corewall concrete (Zone SB) |  | 5d | 2010-09-27 A | 2010-10-12 A | D01SB03303C0 | 100% |  | 2010-08-31 | 2010-09-06 |  |  | CONCRETE [11056 h]; CONCRETE [278 m3]; Cost | D02SB03303C0 | DT | C | 02 | SB | CT | 033 | 03 | BILL 5 | B05 | S2 | 04 | R00 | ACF03 | 033 | 100 |  |  |  |  |  |  |  |  |  |  |  |  |  |  |  |  |  |
| D02S105101C0 |  | DT-02 ; Erection of Structural Steel of 2nd FLR (Zone S1) |  | 3.38d | 2010-10-13 A | 2011-01-29 A | D01S105103C0 | 100% |  | 2010-10-11 | 2010-10-14 |  |  | STRUCTURAL STEEL [16716 h]; STRUCTURAL STEEL [654 T(Fe)]; Cost | D02S105101C0 | DT | C | 02 | S1 | ST | 051 | 01 | BILL 5 | B05 | S2 | 01 | R00 | ACF03 | 051 | 100 | 3968618 | Z2 | DT | P03 | O | A3 | EREC | 1FLR | ST |  |  |  |  |  |  |  |  |
| D02S205101C0 |  | DT-02 ; Erection of Structural Steel of 2nd FLR (Zone S2) |  | 9.26d | 2010-10-17 A | 2011-02-10 A | D01S205103C0 | 100% |  | 2010-10-23 | 2010-11-02 |  |  | STRUCTURAL STEEL [11141 h]; STRUCTURAL STEEL [436 T(Fe)]; Cost | D02S205101C0 | DT | C | 02 | S2 | ST | 051 | 01 | BILL 5 | B05 | S2 | 01 | R00 | ACF03 | 051 | 100 | 4928536 | Z2 | DT | P03 | O | A3 | EREC | 1FLR | ST |  |  |  |  |  |  |  |  |
| D02S305101C0 |  | DT-02 ; Erection of Structural Steel of 2nd FLR (Zone S3) |  | 10d | 2010-11-08 A | 2011-02-23 A | D01S305103C0, OGNMU00041S0 | 100% |  | 2010-12-06 | 2010-12-19 |  |  | STRUCTURAL STEEL [19965 h]; STRUCTURAL STEEL [780 T(Fe)]; Cost | D02S305101C0 | DT | C | 02 | S3 | ST | 051 | 01 | BILL 5 | B05 | S2 | 01 | R00 | ACF03 | 051 | 100 | 5429986 | Z2 | DT | P03 | O | A3 | EREC | 1FLR | ST |  |  |  |  |  |  |  |  |
| D02S205103C0 |  | DT-02 ; Alignment & welding of 2nd FLR (Zone S2) |  | 5d | 2010-11-25 A | 2011-02-17 A | D02S205101C0 | 100% |  | 2011-01-09 | 2011-01-15 |  |  | STRUCTURAL STEEL [1314 h]; Cost | D02S205103C0 | DT | C | 02 | S2 | ST | 051 | 03 | BILL 5 | B05 | S2 | 02 | R00 | ACF03 | 051 | 100 |  | Z2 | DT | P03 | O | A3 | EREC | 1FLR | ST |  |  |  |  |  |  |  |  |
| D02S305103C0 |  | DT-02 ; Alignment & welding of 2nd FLR (Zone S3) |  | 4.88d | 2010-12-06 A | 2011-03-03 A | D02S305101C0 | 100% |  | 2011-01-02 | 2011-01-06 |  |  | STRUCTURAL STEEL [1448 h]; Cost | D02S305103C0 | DT | C | 02 | S3 | ST | 051 | 03 | BILL 5 | B05 | S2 | 02 | R00 | ACF03 | 051 | 100 | 603331.75 | Z2 | DT | P03 | O | A3 | EREC | 1FLR | ST |  |  |  |  |  |  |  |  |
| D02S105305C0 |  | DT-02 ; Metal Decking 2nd FLR (Zone S1) |  | 14d | 2010-12-08 A | 2011-03-23 A | D02S105103C0, D03S105101C0 | 100% |  | 2011-01-02 | 2011-01-17 |  |  | METAL DECKING [1924 h]; METAL DECKING [2435 m2]; Cost | D02S105305C0 | DT | C | 02 | S1 | ST | 053 | 05 | BILL 5 | B05 | S2 | 03 | R00 | ACF03 | 053 | 100 | 287388.39 | Z2 | DT | P03 | O | A3 | MDEC | 1FLR | ST |  |  |  |  |  |  |  |  |
| D02S205305C0 |  | DT-02 ; Metal Decking 2nd FLR (Zone S2) |  | 15d | 2010-12-09 A | 2011-02-26 A | D02S205103C0, D03S205101C0 | 100% |  | 2011-01-26 | 2011-02-13 |  |  | METAL DECKING [2391 h]; METAL DECKING [3025 m2]; Cost | D02S205305C0 | DT | C | 02 | S2 | ST | 053 | 05 | BILL 5 | B05 | S2 | 03 | R00 | ACF03 | 053 | 100 |  | Z2 | DT | P03 | O | A3 | MDEC | 1FLR | ST |  |  |  |  |  |  |  |  |
| D02S305305C0 |  | DT-02 ; Metal Decking 2nd FLR (Zone S3) |  | 18d | 2010-12-18 A | 2011-03-03 A | D02S305103C0, D03S305101C0 | 100% |  | 2011-01-19 | 2011-02-08 |  |  | METAL DECKING [2632 h]; METAL DECKING [3332 m2]; Cost | D02S305305C0 | DT | C | 02 | S3 | ST | 053 | 05 | BILL 5 | B05 | S2 | 03 | R00 | ACF03 | 053 | 100 |  | Z2 | DT | P03 | O | A3 | MDEC | 1FLR | ST |  |  |  |  |  |  |  |  |
| D02S103399C0 |  | DT-02 ; Concrete on Metal Decking 2nd FLR (Zone S1) |  | 10d | 2011-01-02 A | 2011-03-12 A | D02S105305C0 | 100% |  | 2011-01-05 | 2011-01-17 |  |  | CONCRETE [14320 h]; CONCRETE [360 m3]; Cost | D02S105335C0 | DT | C | 02 | S1 | CT | 033 | 99 | BILL 5 | B05 | S2 | 08 | R00 | ACF03 | 033 | 100 |  | Z2 | DT | P03 | O | A3 | MDEC | 1FLR |  |  |  |  |  |  |  |  |  |
| D02S203399C0 |  | DT-02 ; Concrete on Metal Decking 2nd FLR (Zone S2) |  | 10d | 2011-01-02 A | 2011-03-12 A | D02S205305C0 | 100% |  | 2011-01-15 | 2011-01-26 |  |  | CONCRETE [21384 h]; CONCRETE [538 m3]; Cost | D02S205335C0 | DT | C | 02 | S2 | CT | 033 | 99 | BILL 5 | B05 | S2 | 08 | R00 | ACF03 | 033 | 100 |  | Z2 | DT | P03 | O | A3 | MDEC | 1FLR |  |  |  |  |  |  |  |  |  |
| D02S303399C0 |  | DT-02 ; Concrete on Metal Decking 2nd FLR (Zone S3) |  | 10d | 2011-01-02 A | 2011-03-26 A | D02S305305C0 | 100% |  | 2011-01-11 | 2011-01-23 |  |  | CONCRETE [23496 h]; CONCRETE [591 m3]; Cost | D02S305335C0 | DT | C | 02 | S3 | CT | 033 | 99 | BILL 5 | B05 | S2 | 08 | R00 | ACF03 | 033 | 100 |  | Z2 | DT | P03 | O | A3 | MDEC | 1FLR |  |  |  |  |  |  |  |  |  |
| D02S105103C0 |  | DT-02 ; Alignment & welding of 2nd FLR (Zone S1) |  | 3d | 2011-01-26 A | 2011-02-04 A | D02S105101C0 SS+4d | 100% |  | 2010-11-04 | 2010-11-08 |  |  | STRUCTURAL STEEL [1056 h]; Cost | D02S105103C0 | DT | C | 02 | S1 | ST | 051 | 03 | BILL 5 | B05 | S2 | 02 | R00 | ACF03 | 051 | 100 | 440958 | Z2 | DT | P03 | O | A3 | EREC | 1FLR | ST |  |  |  |  |  |  |  |  |
| D02S207807C0 |  | DT-02 ; Cementitious Fire Proofing works 2nd FLR (Zone S2) |  | 14.03d | 2011-02-19 A | 2011-05-31 A | D03S203399C0 | 100% |  | 2011-02-17 | 2011-03-06 |  |  | CEMENTITIOUS FIREPROOFING [2719 h]; CEMENTITIOUS FIREPROOFING [5438 m2]; Cost | D02S207807C0 | DT | C | 02 | S2 | ST | 078 | 07 | BILL 5 | B05 | S2 | 04 | R00 | ACF03 | 078 | 100 |  | Z2 | DT | P03 | O | A3 | FIRE | 1FLR | ST |  |  |  |  |  |  |  |  |
| D02S107807C0 |  | DT-02 ; Cementitious Fire Proofing works 2nd FLR (Zone S1) |  | 13d | 2011-02-22 A | 2011-05-31 A | D03S103399C0 | 100% |  | 2011-02-14 | 2011-03-01 |  |  | CEMENTITIOUS FIREPROOFING [2190 h]; CEMENTITIOUS FIREPROOFING [4379 m2]; Cost | D02S107807C0 | DT | C | 02 | S1 | ST | 078 | 07 | BILL 5 | B05 | S2 | 04 | R00 | ACF03 | 078 | 100 |  | Z2 | DT | P03 | O | A3 | FIRE | 1FLR | ST |  |  |  |  |  |  |  |  |
| D02S307807C0 |  | DT-02 ; Cementitious Fire Proofing works 2nd FLR (Zone S3) |  | 14d | 2011-02-24 A | 2011-04-07 A | D03S303399C0 | 100% |  | 2011-02-17 | 2011-03-05 |  |  | CEMENTITIOUS FIREPROOFING [2996 h]; CEMENTITIOUS FIREPROOFING [5992 m2]; Cost | D02S307807C0 | DT | C | 02 | S3 | ST | 078 | 07 | BILL 5 | B05 | S2 | 04 | R00 | ACF03 | 078 | 100 |  | Z2 | DT | P03 | O | A3 | FIRE | 1FLR | ST |  |  |  |  |  |  |  |  |
| D02CO04413C0 |  | DT-02 ; M1 Bracket (Common Zone) |  | 18d | 2011-04-02 A | 2011-07-18 A | D02S107807C0, D02S207807C0, D02S307807C0 | 100% |  | 2011-03-27 | 2011-04-17 |  |  | FACADE METAL PANEL 1 [1243.1 h]; Cost | D02CO04413C0 | DT | C | 02 | CO | FA | 044 | 13 | BILL 5 | B05 | S2 | FM1 | R00 | ACF05 | 044 | 85 |  |  |  |  |  |  |  |  | FA | 171919.86 | 100 |  |  |  |  |  |  |
| D02CO04415C0 |  | DT-02 ; M1 External Partition (Common Zone) |  | 150d | 2011-04-13 A | 2011-10-17 | D01CO04415C0 SS+20d, D02CO04413C0, D02GN01406C0 FF | 90% | 15d | 2011-06-13 | 2011-12-14 | 114.9d | 0d | PARTITIONS [3350.44 m]; PARTITIONS [16685.5 h]; Cost | D02CO04415C0 | DT | C | 02 | CO | FA | 044 | 15 | BILL 5 | B05 | S2 | FM1 | R00 | ACF05 | 044 | 45 |  |  |  |  |  |  |  |  | FA | 613999.5 | 70 | 85 | 70 |  |  |  |  |
| D02GN01406C0 |  | DT-02 ; Temporary Enclosure | level of effort | 166d | 2011-05-15 A | 2012-05-15 | D02NE09203C0 SS, D02CV09203C0 SS, D02LA09203C0 SS, D02PA09203C0 SS, D02OF09203C0 SS, D02TR09203C0 SS |  | 189d | 2011-05-31 | 2011-12-19 | 45d | 0d | Labor General [0.6 h]; Cost |  | DT | C | 02 | GEN | FA | GEN |  | BILL 5 | B05 |  | TE | R00 | ACF05 | 010 |  |  |  |  |  |  |  |  |  | FA |  | 31 | 46.43 | 30.54 |  |  |  |  |
| D02CO04417C0 |  | DT-02 ; M1 Metal Panel (Common Zone) |  | 64d | 2011-08-10 A | 2011-11-13 | D02CO04415C0 SS | 46% | 34.56d | 2011-08-11 | 2011-10-27 | 247.28d | 0d | FACADE METAL PANEL 1 [3680.9 h]; FACADE METAL PANEL 1 [1345 m2]; FACADE TOTAL QUANTITY m2 [1345 m2]; Cost | D02CO04417C0 | DT | C | 02 | CO | FA | 044 | 17 | BILL 5 | B05 | S2 | FM1 | R00 | ACF05 | 044 |  |  |  |  |  |  |  |  |  | FA |  | 40 | 30 | 0 | 0 | 0 | 0 | 0 |
| D02CO04455C0 |  | DT-02 ; M1 Inner Side of External Partition (Common Zone) |  | 54d | 2011-09-05 A | 2012-02-27 | D02CO04415C0, D02OF09205C0 SS, D02PA09205C0 SS, D02LA09205C0 SS, D02CV09205C0 SS, D02NE09205C0 SS | 65% | 18.9d | 2012-01-25 | 2012-03-29 | 72.15d | 49.1d | FACADE METAL PANEL 1 [20360.7 h]; Cost | DP3CO04415C0 | DT | C | 02 | CO | FA | 044 | 15 | BILL 5 | B05 | S1 | FM1 | R00 | ACF05 | 044 |  |  |  |  |  |  |  |  |  | FA |  |  |  |  |  |  |  |  |
| D02CO04433C0 |  | DT-02 ; C3 Bracket (Canyon) |  | 50d | 2012-02-05 | 2012-04-02 | D02S107807C0, D02S207807C0, D02S307807C0, D03CO04433C0 SS |  |  |  |  | 45d | 0d | FACADE CURTAIN WALL 3 [124.9 h]; Cost | D02CO04433C0 | DT | C | 02 | CO | FA | 044 | 33 | BILL 5 | B05 | S2 | FC3 | R00 | ACF05 | 044 |  |  |  |  |  |  |  |  |  | FA |  |  |  |  |  |  |  |  |
| D02CO04435C0 |  | DT-02 ; C3 Transom & Mullion (Canyon) |  | 60d | 2012-02-07 | 2012-04-16 | D02CO04433C0 SS+2d, D02CO04433C0 FF |  |  |  |  | 45d | 0d | FACADE CURTAIN WALL 3 [499.5 h]; Cost | D02CO04435C0 | DT | C | 02 | CO | FA | 044 | 35 | BILL 5 | B05 | S2 | FC3 | R00 | ACF05 | 044 |  |  |  |  |  |  |  |  |  | FA |  |  |  |  |  |  |  |  |
| D02CO04437C0 |  | DT-02 ; C3 Glazing (Canyon) |  | 83d | 2012-02-09 | 2012-05-15 | D02CO04435C0 SS+2d, D02GN01406C0 FF, D02CO04435C0 FF |  |  |  |  | 45d | 0d | FACADE CURTAIN WALL 3 [356.5 h]; FACADE CURTAIN WALL 3 [130 m2]; FACADE TOTAL QUANTITY m2 [130 m2]; Cost | D02CO04437C0 | DT | C | 02 | CO | FA | 044 | 37 | BILL 5 | B05 | S2 | FC3 | R00 | ACF05 | 044 |  |  |  |  |  |  |  |  |  | FA |  |  |  |  |  |  |  |  |
| D02CO04418C0 |  | DT-02 ; CY Courtyard System Installation (Common Zone) |  | 54d | 2012-04-01 | 2012-06-02 | D02CO04415C0, DR5CO04405C0 |  |  |  |  | 63d | 0d | Labor General [9260.7 h]; Cost | D02CO04417C0 | DT | C | 02 | CO | FA | 044 | 17 | BILL 5 | B05 | S2 | CY | R00 | ACF05 | 044 |  |  |  |  |  |  |  |  |  | FA |  |  |  |  |  |  |  |  |
| D02CO04425C0 |  | DT-02 ; SO Storefront System Installation (Canyon Bridge) |  | 11.88d | 2012-04-03 | 2012-04-16 | D02CO04433C0 |  |  |  |  | 204.12d | 0d | Labor General [0.6 h]; Cost | I05CO04411C0 | DT | C | 02 | CO | FA | 044 | 11 | BILL 5 | B05 | S2 | SO | R00 | ACF05 | 044 |  |  |  |  |  |  |  |  |  | FA |  |  |  |  |  |  |  |  |
| D02CO04434C0 |  | DT-02 ; CA-1 Canyon atrium interior glazing (Canyon) |  | 60d | 2012-05-16 | 2012-07-25 | D02CO04437C0, D01CO04434C0 SS+18d |  |  |  |  | 45d | 0d | Labor General [0.6 h]; Cost | DGLCO04433C0 | DT | C | 02 | CO | FA | 044 | 33 | BILL 5 | B05 | S2 | CA | R00 | ACF05 | 044 |  |  |  |  |  |  |  |  |  | FA |  |  |  |  |  |  |  |  |

| ID | WBS | Activity | Duration | Start | Finish | Predecessors | Complete | Remaining | Planned start | Planned finish | Total float | Free float | Resources | Cost | Actual cost | change id | RENZ % COMPLETE | PERCENT COMPLETE | July2011 Target% Complete | Claimed This Month | CCAD BUILDING(SET) | CCAD PHASE(SET) | CCAD FLOOR(SET) | CCAD ZONE(SET) | CCAD WORK(SET) | CCAD SECTION(SET) | CCAD SERIAL No.(SET) | CCAD SUB ZONE MEP(SET) | CCAD CBS(SET) | CCAD BILL(SET) | CCAD HANDOVER(SET) | CCAD TAG(SET) | CCAD REV(SET) | CCADACF (SET) | CCAD CSA | CCAD SSCF | Act Selector % | user_number8 | user_integer1 | user_integer2 | user_number7 | Change Order # | NEW ACTIVITY ID | P_811 | P_711 | CCAD DIVISION(SET) | CCAD MEQ | R3 Finish |
| --- | --- | --- | --- | --- | --- | --- | --- | --- | --- | --- | --- | --- | --- | --- | --- | --- | --- | --- | --- | --- | --- | --- | --- | --- | --- | --- | --- | --- | --- | --- | --- | --- | --- | --- | --- | --- | --- | --- | --- | --- | --- | --- | --- | --- | --- | --- | --- | --- |
|  | 02 | **Neuro Or , Pat Hold , Prep/Recv** |  | 2011-03-09 | 2012-12-22 |  |  |  |  |  |  |  |  |  |  |  |  |  |  |  |  |  |  |  |  |  |  |  |  |  |  |  |  |  |  |  |  |  |  |  |  |  |  |  |  |  |  |  |
| D02NE21111C0 |  | DT-02 ; 1st Fix, Inst of Sprinkler main pipe (Neuro) | 250d | 2011-03-09 A | 2011-10-29 | D02NE22005C0 SS+7d, D02NE23001C0, D02S107807C0, D02S207807C0 | 90% | 25d | 2011-05-15 | 2012-03-13 | 61.88d | 0d | MECHANICAL [981.6 h]; Cost [53543.7 AED] | 53,543.69 | 48,189.32 | D02NE21111C0 | 65 | 90 | 98 | 15535.25 | DT | C | 02 | NE | ME | 211 | 11 | 1S | BILL 5 | B05 | S2 | 1F | R00 | ACF04 | MEP | 211 | M1F |  |  |  |  |  |  |  |  |  |  |  |
| D02NE22019C0 |  | DT-02 ; 1st Fix, Inst of Drainage pipe (ceiling) (Neuro) | 250d | 2011-03-09 A | 2011-10-05 | D02NE23001C0, D02NE27010C0 SS+7d, D02S107807C0, D02S207807C0 | 98% | 5d | 2011-04-28 | 2012-02-26 | 61.88d | 0d | PLUMBING [1173.6 h]; Cost [61888.2 AED] | 61,888.15 | 60,650.39 | D02NE22019C0 | 60 |  | 98 | 25725.7 | DT | C | 02 | NE | ME | 220 | 19 | 1S | BILL 5 | B05 | S2 | 1F | R00 | ACF04 | MEP | 220 | M1F |  |  |  |  |  |  |  |  |  |  |  |
| D02NE23001C0 |  | DT-02 ; 1st Fix, Inst. of Supports for MEP (Neuro) | 27d | 2011-03-26 A | 2011-05-31 A | D02S107807C0 SS, D02S207807C0 SS | 100% |  | 2011-03-12 | 2011-04-12 |  |  | MECHANICAL [1338 h]; Cost [75432.9 AED] | 75,432.94 | 75,432.94 | D02NE23001C0 | 98 |  |  | 1750.27 | DT | C | 02 | NE | ME | 230 | 01 | 1S | BILL 5 | B05 | S2 | 1F | R00 | ACF04 | MEP | 230 | M1F |  |  |  |  |  |  |  |  |  |  |  |
| D02NE09201C0 |  | DT-02 ; Metal Studs (Neuro) | 90d | 2011-04-06 A | 2011-11-24 | D02NE23001C0, D02PA09201C0 | 78% | 19.8d | 2011-06-16 | 2011-10-02 | 10.28d | 0d | PARTITIONS [9267 h]; PARTITIONS - Metal Studs [1590 m]; Cost |  |  | D02NE09201C0 | 10 |  |  | 297076 | DT | C | 02 | NE | PT | 092 | 01 |  | BILL 5 | B05 | S2 | 1F | R00 | ACF06 | GP | 092 | PMS | 0 | 0 | 0 | 0 | 313 | 944 | 75 | 67 |  |  |  |
| D02NE27001C0 |  | DT-02 ; 1st Fix, Wiring/ Cabling work (Neuro) | 84d | 2011-04-11 A | 2012-02-07 | D02NE26001C0, D02NE26013C0, D02NE27010C0 | 35% | 54.6d | 2011-07-16 | 2011-10-24 | 82.88d | 72.6d | ELECTRICAL [436.8 h]; Cost [21894.9 AED] | 21,894.91 | 7,663.22 | D02NE27001C0 | 5 |  | 35 | 7737.92 | DT | C | 02 | NE | ME | 270 | 01 | 1S | BILL 5 | B05 | S2 | 1F | R00 | ACF04 | MEP | 270 | M1F |  |  |  |  |  |  |  |  |  |  |  |
| D02NE23023C0 |  | DT-02 ; 1st Fix, Inst of Main Ducting (Neuro) | 200d | 2011-04-18 A | 2012-01-11 | D02NE23001C0, D02NE23017C0 SS+7d, D02S107807C0, D02S207807C0 | 90% | 20d | 2011-05-31 | 2012-01-30 | 43.08d | 0d | MECHANICAL [11402.4 h]; Cost [622619 AED] | 622,619.08 | 560,357.18 | D02NE23023C0 | 55 |  | 90 | 36109.35 | DT | C | 02 | NE | ME | 230 | 23 | 1S | BILL 5 | B05 | S2 | 1F | R00 | ACF04 | MEP | 230 | M1F |  |  |  |  |  |  |  |  |  |  |  |
| D02NE26001C0 |  | DT-02 ; 1st Fix, Inst of Trunking/Conduiting (Neuro) | 100d | 2011-04-21 A | 2011-11-03 | D02NE23001C0, D02S107807C0, D02S207807C0 | 70% | 30d | 2011-04-12 | 2011-08-08 | 61.88d | 0d | ELECTRICAL [824.4 h]; Cost [42423.2 AED] | 42,423.24 | 29,696.27 | D02NE26001C0 | 50 |  | 90 | 19994.99 | DT | C | 02 | NE | ME | 260 | 01 | 1S | BILL 5 | B05 | S2 | 1F | R00 | ACF04 | MEP | 260 | M1F |  |  |  |  |  |  |  |  |  |  |  |
| D02NE26013C0 |  | DT-02 ; 1st Fix, Inst of Cable Tray (Neuro) | 100d | 2011-04-25 A | 2011-11-03 | D02NE23001C0, D02NE27010C0 SS+10d, D02S107807C0, D02S207807C0 | 70% | 30d | 2011-05-02 | 2011-08-28 | 103.28d | 20.4d | ELECTRICAL [430.8 h]; Cost [23263.3 AED] | 23,263.34 | 16,284.34 | D02NE26013C0 | 50 |  | 90 | 10800.95 | DT | C | 02 | NE | ME | 260 | 13 | 1S | BILL 5 | B05 | S2 | 1F | R00 | ACF04 | MEP | 260 | M1F |  |  |  |  |  |  |  |  |  |  |  |
| D02NE27010C0 |  | DT-02 ; 1st Fix, Inst of Trunking for ELV system (Neuro) | 84d | 2011-04-25 A | 2011-12-04 | D02NE23001C0, D02NE26001C0 SS+7d, D02S107807C0, D02S207807C0 | 40% | 50.4d | 2011-04-20 | 2011-07-28 | 61.88d | 0d | ELECTRICAL [1689.6 h]; Cost [88597.9 AED] | 88,597.89 | 35,439.16 | D02NE27010C0 | 30 |  | 90 |  | DT | C | 02 | NE | ME | 270 | 10 | 1S | BILL 5 | B05 | S2 | 1F | R00 | ACF04 | MEP | 270 | M1F |  |  |  |  |  |  |  |  |  |  |  |
| D02NE23017C0 |  | DT-02 ; 1st Fix, Inst of CHW pipe (Neuro) | 150d | 2011-04-27 A | 2012-01-23 | D02NE21111C0 SS+7d, D02NE23001C0, D02S107807C0, D02S207807C0, D02NE05503C0 FF+18d | 80% | 30d | 2011-05-23 | 2011-11-21 | 30.07d | 0d | MECHANICAL [6325.2 h]; Cost [345418 AED] | 345,418.28 | 276,334.63 | D02NE23017C0 | 50 |  | 90 |  | DT | C | 02 | NE | ME | 230 | 17 | 1S | BILL 5 | B05 | S2 | 1F | R00 | ACF04 | MEP | 230 | M1F |  |  |  |  |  |  |  |  |  |  |  |
| D02NE23015C0 |  | DT-02 ; 2nd Fix, Insulation of CHW pipe & Duct (Neuro) | 90d | 2011-05-03 A | 2012-04-09 | D02NE23009C0, D02NE23017C0, D02NE23023C0 | 65% | 31.5d | 2011-08-17 | 2011-12-08 | 30.07d | 19.8d | MECHANICAL [5311.2 h]; Cost [286617 AED] | 286,617.06 | 186,301.09 | D02NE23015C0 | 10 |  | 80 |  | DT | C | 02 | NE | ME | 230 | 15 | 2n | BILL 5 | B05 | S2 | 2F | R00 | ACF07 | MEP | 230 |  | 0 | 0 | 0 | 0 |  |  |  |  |  |  |  |
| D02NE22005C0 |  | DT-02 ; 1st Fix, Inst of Water supply pipe (ceiling) (Neuro) | 84d | 2011-05-08 A | 2011-11-28 | D02NE22019C0 SS+7d, D02NE23001C0, D02S107807C0, D02S207807C0 | 45% | 46.2d | 2011-05-07 | 2011-08-14 | 61.88d | 0d | PLUMBING [4896 h]; Cost [264473 AED] | 264,473.49 | 119,013.07 | D02NE22005C0 | 30 |  | 65 |  | DT | C | 02 | NE | ME | 220 | 05 | 1S | BILL 5 | B05 | S2 | 1F | R00 | ACF04 | MEP | 220 | M1F |  |  |  |  |  |  |  |  |  |  |  |
| D02NE09203C0 |  | DT-02 ; Partitions 1st face (Neuro) | 90d | 2011-05-15 A | 2011-12-18 | D02NE09201C0 SS+12d | 59% | 36.9d | 2011-06-15 | 2011-10-02 | 30.07d | 0d | PARTITIONS [1590 m]; PARTITIONS [7253 h]; Cost |  |  | D02NE09203C0 | 10 |  |  | 91499.41 | DT | C | 02 | NE | PT | 092 | 03 |  | BILL 5 | B05 | S2 | 2F | R00 | ACF06 | GP | 092 | P1F | 0 | 0 | 0 | 0 | 314 | 945 | 50 | 27 |  |  |  |
| D02NE21117C0 |  | DT-02 ; 1st Fix, Inst of Sprinkler branch pipe (Neuro) | 250d | 2011-05-15 A | 2012-01-23 | D02NE09201C0, D02NE21111C0, D02NE05503C0 FF+18d | 90% | 25d | 2011-07-18 | 2012-05-15 | 65.78d | 55.5d | MECHANICAL [1441.2 h]; Cost [78749.8 AED] | 78,749.79 | 70,874.81 | D02NE21117C0 | 45 | 90 | 98 | 13693.69 | DT | C | 02 | NE | ME | 211 | 17 | 1S | BILL 5 | B05 | S2 | 1F | R00 | ACF04 | MEP | 211 | M1F |  |  |  |  |  |  |  |  |  |  |  |
| D02NE22011C0 |  | DT-02 ; 2nd Fix, Drainage/Water pipe (wall) (Neuro) | 78d | 2011-05-15 A | 2012-01-09 | D02NE09201C0, DAFMI22002R20 FS+65d | 55% | 35.1d | 2011-06-15 | 2011-09-18 | 23.77d | 13.5d | PLUMBING [1173.6 h]; Cost [61888.2 AED] | 61,888.15 | 34,038.49 | D02NE22011C0 | 45 |  | 55 |  | DT | C | 02 | NE | ME | 220 | 11 | 2n | BILL 5 | B05 | S2 | 2F | R00 | ACF07 | MEP | 220 |  |  |  |  |  |  |  |  |  |  |  |  |
| D02NE26007C0 |  | DT-02 ; 2nd Fix, Cable Pulling (Neuro) | 54d | 2011-06-13 A | 2011-12-25 | D02NE09201C0 SS+6d | 20% | 43.2d | 2011-06-13 | 2011-08-16 | 35.48d | 25.2d | ELECTRICAL [6634.8 h]; Cost [332625 AED] | 332,625.29 | 66,525.06 | D02NE26007C0 |  |  | 45 | 178003.62 | DT | C | 02 | NE | ME | 260 | 07 | 2n | BILL 5 | B05 | S2 | 2F | R00 | ACF07 | MEP | 260 |  |  |  |  |  |  |  |  |  |  |  |  |
| D02NE26009C0 |  | DT-02 ; 2nd Fix, Inst of Wall conduites (Neuro) | 54d | 2011-06-13 A | 2012-01-24 | D02NE09201C0 | 10% | 48.6d | 2011-06-13 | 2011-08-16 | 10.28d | 0d | ELECTRICAL [824.4 h]; Cost [42423.2 AED] | 42,423.24 | 4,242.32 | D02NE26009C0 |  |  | 35 | 4998.66 | DT | C | 02 | NE | ME | 260 | 09 | 2n | BILL 5 | B05 | S2 | 2F | R00 | ACF07 | MEP | 260 |  |  |  |  |  |  |  |  |  |  |  |  |
| D02NE22015C0 |  | DT-02 ; 2nd Fix, Medical Gas pipe (Neuro) | 60d | 2011-06-14 A | 2012-01-16 | D02NE09201C0, D02NE22007C0 SS | 30% | 42d | 2011-08-02 | 2011-10-13 | 16.88d | 6.6d | PLUMBING [1616.4 h]; Cost [83529.6 AED] | 83,529.57 | 25,058.87 | D02NE22015C0 |  |  | 45 | 43562.8 | DT | C | 02 | NE | ME | 220 | 15 | 2n | BILL 5 | B05 | S2 | 2F | R00 | ACF07 | MEP | 220 |  |  |  |  |  |  |  |  |  |  |  |  |
| D02NE22007C0 |  | DT-02 ; 1st Fix, Inst of Medical Gas pipe (Neuro) | 90d | 2011-07-10 A | 2011-11-20 | D02NE21111C0 SS+10d, D02NE23001C0, D02S107807C0, D02S207807C0 | 55% | 40.5d | 2011-06-30 | 2011-10-15 | 61.88d | 45d | PLUMBING [1616.4 h]; Cost [83529.6 AED] | 83,529.57 | 45,941.26 | D02NE22007C0 |  |  | 55 |  | DT | C | 02 | NE | ME | 220 | 07 | 1S | BILL 5 | B05 | S2 | 1F | R00 | ACF04 | MEP | 220 | M1F |  |  |  |  |  |  |  |  |  |  |  |
| D02NE05503C0 |  | DT-02 ; Ceiling Support for medical equipment (Neuro) | 24d | 2011-09-05 A | 2012-01-02 | D02NE09203C0, DAFMI22002R20 FS+65d | 50% | 12d | 2011-11-30 | 2011-12-28 | 30.07d | 0d | SECONDARY STEEL [202 h]; STRUCTURAL STEEL [21 T(Fe)]; Cost |  |  | D02NE05503C0 |  |  |  |  | DT | C | 02 | NE | SW | 055 | 03 |  | BILL 5 | B05 | S2 | 03 | R00 | ACF03 |  | b |  |  |  |  |  | 335 | 962 |  |  |  |  |  |
| D02NE23008C0 |  | DT-02 ; 1st Fix, Inst of VCD's/FD's (Neuro) | 66d | 2011-09-05 A | 2012-03-25 | D02NE23023C0, D02NE05503C0 FF+18d | 5% | 62.7d | 2011-09-25 | 2011-12-15 | 43.08d | 32.8d | MECHANICAL [4312.8 h]; Cost [232964 AED] | 232,964.23 | 11,648.21 | D02NE23008C0 |  |  | 80 |  | DT | C | 02 | NE | ME | 230 | 08 | 1S | BILL 5 | B05 | S2 | 1F | R00 | ACF04 | MEP | 230 | M1F |  |  |  |  |  |  |  |  |  |  |  |
| D02NE23009C0 |  | DT-02 ; 2nd Fix, Inst of VAV'S CHW connection (Neuro) | 36d | 2011-09-05 A | 2012-03-04 | D02NE23017C0 | 5% | 34.2d | 2011-10-06 | 2011-11-20 | 30.07d | 0d | MECHANICAL [1684.8 h]; Cost [91006.1 AED] | 91,006.06 | 4,550.3 | D02NE23009C0 |  | 5 | 25 |  | DT | C | 02 | NE | ME | 230 | 09 | 2n | BILL 5 | B05 | S2 | 2F | R00 | ACF07 | MEP | 230 |  |  |  |  |  |  |  |  |  |  |  |  |
| D02NE08103C0 |  | DT-02 ; Door Frames (Neuro) | 42d | 2011-12-05 | 2012-01-23 | D02NE09201C0 SS+14d, GNHE08101C0 FS+93d, D02LA08103C0 SS+3d |  |  |  |  | 48d | 0d | ASSORTED DOORS [883 h]; Cost |  |  | D02CV08103C0 |  |  |  |  | DT | C | 02 | CV | DO | 081 | 03 |  | BILL 5 | B05 | S2 | DF | R00 | ACF06 |  | 081 |  |  |  |  |  | 316 | 947 |  |  | 08 |  |  |
| D02NE05511C0 |  | DT-02 ; Wall reinforcement for MEP/Medical (Neuro) | 23.88d | 2011-12-07 | 2012-01-04 | D02NE09201C0, DAFMI22002R02 FS+65d |  |  |  |  | 33d | 22.73d | SECONDARY STEEL [65 h]; Cost |  |  | D02NE05511C0 |  |  |  |  | DT | C | 02 | NE | SW | 055 | 11 |  | BILL 5 | B05 | S2 | 03 | R00 | ACF03 |  | b |  |  |  |  |  |  |  |  |  |  |  |  |
| D02NE01005C0 |  | DT-02 ; 2nd, Wall Inspection by Consultant (Neuro) | 6d | 2012-01-24 | 2012-01-31 | D02NE22011C0, D02NE22015C0, D02NE26007C0, D02NE26009C0 |  |  |  |  | 10.28d | 0d | Labor General [1.2 h]; Cost |  |  | D02NE01005C0 |  |  | 20 |  | DT | C | 02 | NE | ME | 010 | 05 | 2n | BILL 5 | B05 | S2 | WI | R00 | ACF07 | MEP | 010 |  |  |  |  |  |  |  |  |  |  |  |  |
| D02NE09205C0 |  | DT-02 ; Partitions Closing (Neuro) | 48d | 2012-01-31 | 2012-03-28 | D02NE01005C0, D02NE05511C0, D02NE09203C0, D02NE22005C0, D02NE22019C0, DAFOA09206C1 FF, D02NE08103C0 FF, D02NE21117C0 FF, DAFMI22002R20 FS+65d |  |  |  |  | 10.28d | 0d | PARTITIONS [1590 m]; PARTITIONS [9295 h]; Cost |  |  | D02NE09205C0 |  |  |  |  | DT | C | 02 | NE | PT | 092 | 05 |  | BILL 5 | B05 | S2 | FF | R00 | ACF06 | GP | 092 | P2F |  |  |  |  | 315 | 946 |  |  |  |  |  |
| D02NE07103C0 |  | DT-02 ; Waterproofing (Neuro) | 12d | 2012-03-28 | 2012-04-11 | D02NE08103C0, D02NE09205C0 |  |  |  |  | 64.28d | 54d | THERMAL & MOISTURE [640 h]; THERMAL & MOISTURE [4250 m2]; Cost |  |  | D02NE07103C0 |  |  |  |  | DT | C | 02 | NE | FF | 071 | 03 |  | BILL 5 | B05 | S2 | 01 | R00 | ACF03 |  | 071 |  |  |  |  |  | 105 | 999 |  |  |  |  |  |
| D02NE09901C0 |  | DT-02 ; Wall Prime & 1st coat (Neuro) | 30d | 2012-03-28 | 2012-05-02 | D02NE09205C0 |  |  |  |  | 10.28d | 0d | WALL PAINT [2091 h]; WALL PAINT [2609 m2]; Cost |  |  | D02NE09901C0 |  |  |  |  | DT | C | 02 | NE | PA | 099 | 01 |  | BILL 5 | B05 | S2 | 01 | R00 | ACF06 |  | 099 |  |  |  |  |  | 328 | 956 |  |  |  |  |  |
| D02NE26005C0 |  | DT-02 ; 2nd Fix, Wiring for Power/Lighting/Emergency (Neuro) | 36d | 2012-03-28 | 2012-05-09 | D02NE09205C0 |  |  |  |  | 76.28d | 0d | ELECTRICAL [436.8 h]; Cost |  |  | D02NE26005C0 |  |  |  |  | DT | C | 02 | NE | ME | 260 | 05 | 2n | BILL 5 | B05 | S2 | 2F | R00 | ACF07 | MEP | 260 |  |  |  |  |  |  |  |  |  |  |  |  |
| D02NE26011C0 |  | DT-02 ; 2nd Fix, Inst of Equipment (DB) (Neuro) | 48d | 2012-03-28 | 2012-05-23 | D02NE09205C0 |  |  |  |  | 70.28d | 54d | ELECTRICAL [4054.8 h]; Cost |  |  | D02NE26011C0 |  |  |  |  | DT | C | 02 | NE | ME | 260 | 11 | 2n | BILL 5 | B05 | S2 | 2F | R00 | ACF04 | MEP | 260 |  |  |  |  |  |  |  |  |  |  | E |  |
| D02NE26053C0 |  | DT-02 ; 2nd Fix, Wiring / Cabling (Neuro) | 36d | 2012-03-28 | 2012-05-09 | D02NE26009C0, D02NE09205C0 |  |  |  |  | 130.28d | 120d | ELECTRICAL [436.8 h]; Cost |  |  | D02NE26053C0 |  |  |  |  | DT | C | 02 | NE | ME | 260 | 53 | 2n | BILL 5 | B05 | S2 | 2F | R00 | ACF07 | MEP | 260 |  |  |  |  |  | 389 | 977 |  |  |  |  |  |
| D02NE27020C0 |  | DT-02 ; 2nd Fix, Inst of ELV Equipment (Panels) (Neuro) | 42d | 2012-03-28 | 2012-05-16 | D02NE09205C0 |  |  |  |  | 76.28d | 60d | ELECTRICAL [1723.2 h]; Cost |  |  | D02NE27020C0 |  |  |  |  | DT | C | 02 | NE | ME | 270 | 20 | 2n | BILL 5 | B05 | S2 | 2F | R00 | ACF04 | MEP | 270 |  |  |  |  |  |  |  |  |  |  | E |  |
| D02NE05501C0 |  | DT-02 ; Handrails & balustrade (Neuro) | 36d | 2012-05-02 | 2012-06-13 | D02NE09901C0, D02CO10200R02 FF |  |  |  |  | 46.27d | 36d | SECONDARY STEEL [321 h]; Cost |  |  | D02NE05501C0 |  |  |  |  | DT | C | 02 | NE | SW | 055 | 01 |  | BILL 5 | B05 | S2 | 01 | R00 | ACF03 |  | a |  |  |  |  |  |  |  |  |  |  |  |  |
| D02NE09501C0 |  | DT-02 ; Ceiling Grid and Service Tile (Neuro) | 36d | 2012-05-02 | 2012-06-13 | D02NE05503C0, D02NE09205C0 SS+15d, D02NE21117C0, D02NE23008C0, D02NE23009C0, D02NE23015C0, D02NE27001C0, DAFMI22003R02 FS+65d, D02NE09901C0 |  |  |  |  | 10.28d | 0d | CEILING GRID FOR GYPSUM [5766.08 h]; CEILING GRID FOR GYPSUM [493.4 m2]; Cost |  |  | D02NE09501C0 |  |  |  |  | DT | C | 02 | NE | CE | 095 | 01 |  | BILL 5 | B05 | S2 | 01 | R00 | ACF06 |  | 095 |  |  |  |  |  | 323 | 952 |  |  |  |  | R3 |
| D02NE26015C0 |  | DT-02 ; Final Fix, Termination & Gladding of Cables (Neuro) | 48d | 2012-05-09 | 2012-07-05 | D02NE26005C0 |  |  |  |  | 76.28d | 66d | ELECTRICAL [368.4 h]; Cost |  |  | D02NE26015C0 |  |  |  |  | DT | C | 02 | NE | ME | 260 | 15 | FF | BILL 5 | B05 | S2 | FF | R00 | ACF07 | MEP | 260 |  |  |  |  |  |  |  |  |  |  |  |  |
| D02NE09305C0 |  | DT-02 ; Flooring (Terrazzo) (Neuro) | 36d | 2012-06-13 | 2012-07-26 | D02NE07103C0, D02NE09501C0 |  |  |  |  | 10.28d | 0d | TERRAZO FLOOR [500 m2]; TERRAZO FLOOR [904 h]; Cost |  |  | D02NE09305C0 |  |  |  |  | DT | C | 02 | NE | FF | 096 | 05 |  | BILL 5 | B05 | S2 | 07 | R00 | ACF06 |  | TZ |  |  |  |  |  | 106 | 1000 |  |  |  |  |  |
| D02NE09601C0 |  | DT-02 ; Flooring (Rubber & etc) (Neuro) | 36d | 2012-06-13 | 2012-07-26 | D02NE09901C0, D02NE09501C0, D02NE05501C0 FF |  |  |  |  | 10.28d | 0d | RUBBER FLOOR [392 h]; RUBBER FLOOR [980 m2]; Cost |  |  | D02NE09601C0 |  |  |  |  | DT | C | 02 | NE | FF | 096 | 01 |  | BILL 5 | B05 | S2 | 03 | R00 | ACF06 |  | RF |  |  |  |  |  | 326 | 955 |  |  |  |  |  |
| D02NE09905C0 |  | DT-02 ; Ceiling Prime & 1st coat (Neuro) | 36d | 2012-06-13 | 2012-07-26 | D02NE09501C0 |  |  |  |  | 70.28d | 0d | ASSORTED CEILING FINISH [207 h]; Cost |  |  | D02NE09905C0 |  |  |  |  | DT | C | 02 | NE | PA | 099 | 05 |  | BILL 5 | B05 | S2 | 01 | R00 | ACF06 |  | 099 |  |  |  |  |  | 330 | 958 |  |  |  |  |  |
| D02NE21113C0 |  | DT-02 ; Final Fix, Inst of Sprinklers Head/ Extinguisher (Neuro) | 48d | 2012-06-13 | 2012-08-09 | D02NE09501C0 |  |  |  |  | 46.27d | 36d | MECHANICAL [403.2 h]; Cost |  |  | D02NE21113C0 |  |  |  |  | DT | C | 02 | NE | ME | 211 | 13 | FF | BILL 5 | B05 | S2 | FF | R00 | ACF07 | MEP | 211 |  |  |  |  |  |  |  |  |  |  |  |  |
| D02NE21115C0 |  | DT-02 ; 2nd Fix, Inst of Sprinkler droppers (Neuro) | 36d | 2012-06-13 | 2012-07-26 | D02NE09501C0 |  |  |  |  | 58.27d | 48d | MECHANICAL [2067.6 h]; Cost |  |  | D02NE21115C0 |  |  |  |  | DT | C | 02 | NE | ME | 211 | 15 | 2n | BILL 5 | B05 | S2 | 2F | R00 | ACF07 | MEP | 211 |  |  |  |  |  |  |  |  |  |  |  |  |
| D02NE23021C0 |  | DT-02 ; 2nd Fix, Inst of Flexible Duct & Plenum boxes (Neuro) | 36d | 2012-06-13 | 2012-07-26 | D02NE09205C0, D02NE09501C0 |  |  |  |  | 28.27d | 0d | MECHANICAL [274.8 h]; Cost |  |  | D02NE23021C0 |  |  |  |  | DT | C | 02 | NE | ME | 230 | 21 | 2n | BILL 5 | B05 | S2 | 2F | R00 | ACF07 | MEP | 230 |  |  |  |  |  |  |  |  |  |  |  |  |
| D02NE26017C0 |  | DT-02 ; Final Fix, Inst of Ceiling rose (Neuro) | 48d | 2012-06-13 | 2012-08-09 | D02NE09501C0 |  |  |  |  | 39.27d | 0d | ELECTRICAL [67.2 h]; Cost |  |  | D02NE26017C0 |  |  |  |  | DT | C | 02 | NE | ME | 260 | 17 | FF | BILL 5 | B05 | S2 | FF | R00 | ACF07 | MEP | 260 |  |  |  |  |  |  |  |  |  |  |  |  |
| D02NE27002C0 |  | DT-02 ; 2nd Fix, Wiring Droppers (Neuro) | 36d | 2012-06-13 | 2012-07-26 | D02NE09501C0 |  |  |  |  | 34.27d | 0d | ELECTRICAL [436.8 h]; Cost |  |  | D02NE27002C0 |  |  |  |  | DT | C | 02 | NE | ME | 270 | 02 | 2n | BILL 5 | B05 | S2 | 2F | R00 | ACF07 | MEP | 270 |  |  |  |  |  |  |  |  |  |  |  |  |
| D02NE23019C0 |  | DT-02 ; Final Fix, Inst of Grilles & Diffusers (Neuro) | 60d | 2012-06-21 | 2012-09-02 | D02NE09501C0, D02NE23021C0 SS+6d |  |  |  |  | 28.27d | 18d | MECHANICAL [2560.8 h]; Cost |  |  | D02NE23019C0 |  |  |  |  | DT | C | 02 | NE | ME | 230 | 19 | FF | BILL 5 | B05 | S2 | FF | R00 | ACF07 | MEP | 230 |  |  |  |  |  |  |  |  |  |  |  |  |
| D02NE27030C0 |  | DT-02 ; Final Fix, Inst of ELV device (Detector/Speaker) (Neuro) | 54d | 2012-06-21 | 2012-08-26 | D02NE09501C0, D02NE27002C0 SS+6d |  |  |  |  | 34.27d | 24d | ELECTRICAL [2152.8 h]; Cost |  |  | D02NE27030C0 |  |  |  |  | DT | C | 02 | NE | ME | 270 | 30 | FF | BILL 5 | B05 | S2 | FF | R00 | ACF07 | MEP | 270 |  |  |  |  |  |  |  |  |  |  |  |  |
| D02NE26003C0 |  | DT-02 ; Final Fix, Inst of Light fittings (Neuro) | 48d | 2012-06-23 | 2012-08-18 | D02NE09501C0, D02NE26017C0 SS+7d |  |  |  |  | 39.27d | 29d | ELECTRICAL [6626.4 h]; Cost |  |  | D02NE26003C0 |  |  |  |  | DT | C | 02 | NE | ME | 260 | 03 | FF | BILL 5 | B05 | S2 | FF | R00 | ACF07 | MEP | 260 |  |  |  |  |  |  |  |  |  |  |  |  |
| D02NE06101C0 |  | DT-02 ; Wood / caseworks (Neuro) | 48d | 2012-07-26 | 2012-09-23 | D02CO04415C0, D02NE09501C0, D02NE09901C0, D02CO04437C0, DAFWA00111M0, CAFWA00113M0, DAFMI22003R02 FS+184d, D02NE09305C0, D02NE09601C0 |  |  |  |  | 10.28d | 0d | WOOD WORK/CASEWORK [649.48 no]; WOOD WORK/CASEWORK [5445 h]; Cost |  |  | D02NE06101C0 |  |  |  |  | DT | C | 02 | NE | WO | 061 | 01 |  | BILL 5 | B05 | S2 | WW | R00 | ACF06 |  | 061 |  |  |  |  |  | 332 | 960 |  |  |  |  |  |
| D02NE06102C0 |  | DT-02 ; Head Wall (Neuro) | 36d | 2012-07-26 | 2012-09-09 | D02CO04415C0, D02NE09501C0, D02NE06101C0 SS, DAFWA00111M0, DAFMI22003R02 FS+184d |  |  |  |  | 70.28d | 60d | WOOD WORK/CASEWORK [3704 h]; Cost |  |  | D02NE06102C0 |  |  |  |  | DT | C | 02 | NE | WO | 061 | 02 |  | BILL 5 | B05 | S2 | WW | R00 | ACF06 |  | 061 |  |  |  |  |  | 332 | 960 |  |  |  |  |  |
| D02NE08107C0 |  | DT-02 ; Doors (Neuro) | 42d | 2012-07-26 | 2012-09-16 | D02NE07103C0, D02NE08103C0, D02NE09901C0, D02NE09601C0, D02NE09305C0 |  |  |  |  | 33.58d | 0d | ASSORTED DOORS [1420 h]; ASSORTED DOORS [142 no]; Cost |  |  | D02NE08107C0 |  |  |  |  | DT | C | 02 | NE | DO | 081 | 07 |  | BILL 5 | B05 | S2 | DR | R00 | ACF06 |  | 081 |  |  |  |  |  | 317 | 948 |  |  | 08 |  |  |
| D02NE09701C0 |  | DT-02 ; Wall finishes (ST, WD, WC) (Neuro) | 48d | 2012-07-26 | 2012-09-23 | D02NE26011C0, D02NE27020C0, DAFMI22003R02 FS+164d, D02NE09305C0, D02NE09601C0 |  |  |  |  | 16.27d | 0d | ASSORTED WALL FINISH [2176 h]; ASSORTED WALL FINISH [2502 m2]; Cost |  |  | D02NE09701C0 |  |  |  |  | DT | C | 02 | NE | WF | 097 | 01 |  | BILL 5 | B05 | S2 | 01 | R00 | ACF06 |  | 097 |  |  |  |  |  | 105 | 1002 |  |  |  |  | R3 |
| D02NE09903C0 |  | DT-02 ; Wall Final Paint (Neuro) | 36d | 2012-07-26 | 2012-09-09 | D02NE09901C0, D02NE09905C0 |  |  |  |  | 70.28d | 48d | WALL PAINT [1127 h]; WALL PAINT [1405 m2]; Cost |  |  | D02NE09903C0 |  |  |  |  | DT | C | 02 | NE | PA | 099 | 03 |  | BILL 5 | B05 | S2 | 02 | R00 | ACF06 |  | 099 |  |  |  |  |  | 329 | 957 |  |  |  |  |  |
| D02NE22025C0 |  | DT-02 ; Final Fix, Inst of Sanitary Ware (Neuro) | 48d | 2012-07-26 | 2012-09-23 | D02NE09205C0, D02NE09305C0, A10230 FS+148d |  |  |  |  | 39.27d | 0d | PLUMBING [1917.6 h]; Cost |  |  | D02NE22025C0 |  |  |  |  | DT | C | 02 | NE | ME | 220 | 25 | FF | BILL 5 | B05 | S2 | FF | R00 | ACF07 | MEP | 220 |  |  |  |  |  |  |  |  |  |  |  |  |
| D02NE11005C0 |  | DT-02 ; Utility belt (Neuro) | 24d | 2012-08-02 | 2012-09-02 | D02NE06101C0 SS+6d, D02NE09205C0 |  |  |  |  | 10.28d | 0d | FF&E [145 h]; FF&E [76.91 no]; Cost |  |  | D02NE11005C0 |  |  |  |  | DT | C | 02 | NE | WO | 110 | 05 |  | BILL 5 | B05 | S2 | 05 | R00 | ACF08 |  | e |  |  |  |  |  |  |  |  |  |  |  |  |
| D02NE22021C0 |  | DT-02 ; Final Fix, Terminate Sanitary Ware & Appliances (Neuro) | 48d | 2012-08-04 | 2012-10-01 | D02NE22011C0, D02NE22025C0 SS+7d |  |  |  |  | 39.27d | 29d | PLUMBING [1917.6 h]; Cost |  |  | D02NE22021C0 |  |  |  |  | DT | C | 02 | NE | ME | 220 | 21 | FF | BILL 5 | B05 | S2 | FF | R00 | ACF07 | MEP | 220 |  |  |  |  |  |  |  |  |  |  |  |  |
| D02NE22029C0 |  | DT-02 ; Final Fix, Medical Gas pipe (Neuro) | 18d | 2012-09-02 | 2012-09-23 | D02NE22015C0, D02NE11005C0 |  |  |  |  | 10.28d | 0d | PLUMBING [1616.4 h]; Cost |  |  | D02NE22029C0 |  |  |  |  | DT | C | 02 | NE | ME | 220 | 29 | FF | BILL 5 | B05 | S2 | FF | R00 | ACF07 | MEP | 220 |  |  |  |  |  |  |  |  |  |  |  |  |
| D02NE08709C0 |  | DT-02 ; Ironmongery (Neuro) | 30.7d | 2012-09-16 | 2012-10-22 | D02NE08107C0 |  |  |  |  | 33.58d | 23.3d | IRONMONGERY [670 h]; IRONMONGERY [67 no]; Cost |  |  | D02NE08709C0 |  |  |  |  | DT | C | 02 | NE | DO | 087 | 09 |  | BILL 5 | B05 | S2 | IM | R00 | ACF06 |  | 087 |  |  |  |  |  | 322 | 951 |  |  | 08 |  |  |
| D02NE01006C0 |  | DT-02 ; 2nd, Ceiling Inspection by Consultants (Neuro) | 6d | 2012-09-23 | 2012-09-30 | D02NE21115C0, D02NE23009C0, D02NE23015C0, D02NE27002C0, D02NE21113C0, D02NE22029C0, D02NE23019C0, D02NE26003C0, D02NE26017C0, D02NE27030C0, D02NE26015C0 |  |  |  |  | 10.28d | 0d | Labor General [1.2 h]; Cost |  |  | D02NE01006C0 |  |  |  |  | DT | C | 02 | NE | ME | 010 | 06 | 2n | BILL 5 | B05 | S2 | CI | R00 | ACF07 | MEP | 010 |  |  |  |  |  |  |  |  |  |  |  |  |
| D02NE11001C0 |  | DT-02 ; Wall Protection (WP, CG, WG, FCG) (Neuro) | 24d | 2012-09-23 | 2012-10-21 | D02NE09701C0, D02NE09903C0 SS |  |  |  |  | 34.27d | 24d | FF&E [2985 h]; Cost |  |  | D02NE11001C0 |  |  |  |  | DT | C | 02 | NE | WF | 110 | 01 |  | BILL 5 | B05 | S2 | 03 | R00 | ACF08 |  | b |  |  |  |  |  | 326 | 1001 |  |  |  |  |  |
| D02NE09503C0 |  | DT-02 ; Ceiling closure - ACT/Gypsum (Neuro) | 18d | 2012-09-30 | 2012-10-21 | D02NE01006C0, D02NE21115C0, D02NE26005C0, D02NE27001C0, D02NE27002C0, DAFOA09505C1 FF, D02NE06101C0, D02NE09701C0, D02NE23021C0, D02NE26053C0 |  |  |  |  | 10.28d | 0d | ASSORTED CEILING FINISH [1168.5 h]; CEILING GYPSUM [161.75 h]; ASSORTED CEILING FINISH [1900 m2]; CEILING GYPSUM [493 m2]; Cost |  |  | D02NE09503C0 |  |  |  |  | DT | C | 02 | NE | CE | 095 | 03 |  | BILL 5 | B05 | S2 | 02 | R00 | ACF06 |  | 095 |  |  |  |  |  | 324 | 953 |  |  |  |  | R3 |
| D02NE09907C0 |  | DT-02 ; Ceiling Final paint (Neuro) | 12d | 2012-10-21 | 2012-11-06 | D02NE09601C0, D02NE09905C0, D02NE09503C0 |  |  |  |  | 22.27d | 12d | ASSORTED CEILING FINISH [113 h]; Cost |  |  | D02NE09907C0 |  |  |  |  | DT | C | 02 | NE | PA | 099 | 07 |  | BILL 5 | B05 | S2 | 02 | R00 | ACF06 |  | 099 |  |  |  |  |  | 331 | 959 |  |  |  |  |  |
| D02NE11003C0 |  | DT-02 ; FF & E (Neuro) | 12d | 2012-10-21 | 2012-11-06 | D02NE09601C0, D02NE09503C0 |  |  |  |  | 22.27d | 12d | FF&E [80 h]; FF&E [42.44 no]; Cost |  |  | D02NE11003C0 |  |  |  |  | DT | C | 02 | NE | WO | 110 | 03 |  | BILL 5 | B05 | S2 | 04 | R00 | ACF08 |  | a |  |  |  |  |  | 333 | 961 |  |  |  |  |  |
| D02NE22027C0 |  | DT-02 ; Final Fix, Inst of All drain (Neuro) | 12d | 2012-10-21 | 2012-11-06 | D02NE09305C0, D02NE09503C0 |  |  |  |  | 10.28d | 0d | PLUMBING [1173.6 h]; Cost |  |  | D02NE22027C0 |  |  |  |  | DT | C | 02 | NE | ME | 220 | 27 | FF | BILL 5 | B05 | S2 | FF | R00 | ACF07 | MEP | 220 |  |  |  |  |  |  |  |  |  |  |  |  |
| D02NE26019C0 |  | DT-02 ; Final Fix, Inst of Switch/Sockets (Neuro) | 12d | 2012-10-21 | 2012-11-06 | D02NE09901C0, D02NE09503C0 |  |  |  |  | 10.28d | 0d | ELECTRICAL [610.8 h]; Cost |  |  | D02NE26019C0 |  |  |  |  | DT | C | 02 | NE | ME | 260 | 19 | FF | BILL 5 | B05 | S2 | FF | R00 | ACF07 | MEP | 260 |  |  |  |  |  |  |  |  |  |  |  |  |

| ID | WBS | Activity | Duration | Start | Finish | Predecessors | Complete | Remaining | Planned start | Planned finish | Total float | Free float | Resources | Cost | Actual cost | change id | CCAD BUILDING(SET) | CCAD PHASE(SET) | CCAD FLOOR(SET) | CCAD ZONE(SET) | CCAD WORK(SET) | CCAD SECTION(SET) | CCAD SERIAL No.(SET) | CCAD CBS(SET) | CCAD BILL(SET) | CCAD HANDOVER(SET) | CCAD TAG(SET) | CCAD REV(SET) | CCADACF (SET) | CCAD SSCF | RENZ % COMPLETE | Claimed This Month | CCAD SUB ZONE MEP(SET) | CCAD CSA | Act Selector % | user_number8 | user_integer1 | user_integer2 | user_number7 | Change Order # | NEW ACTIVITY ID | P_811 | P_711 | PERCENT COMPLETE | July2011 Target% Complete | CCAD DIVISION(SET) | CCAD MEQ | R3 Finish |
| --- | --- | --- | --- | --- | --- | --- | --- | --- | --- | --- | --- | --- | --- | --- | --- | --- | --- | --- | --- | --- | --- | --- | --- | --- | --- | --- | --- | --- | --- | --- | --- | --- | --- | --- | --- | --- | --- | --- | --- | --- | --- | --- | --- | --- | --- | --- | --- | --- |
|  | 10 | **Precommissioning Tesing & snagging (Neuro Or , Pat Hold , Prep/Recv)** |  | 2012-11-06 | 2012-12-22 |  |  |  |  |  |  |  |  |  |  |  |  |  |  |  |  |  |  |  |  |  |  |  |  |  |  |  |  |  |  |  |  |  |  |  |  |  |  |  |  |  |  |  |
| D02TS01801C0 |  | DT-02 ; MEP de-snag, FIREM sign-off | 12d | 2012-11-06 | 2012-11-21 | D02NE22025C0, D02NE22027C0, D02NE26015C0, D02NE22021C0, D02NE21113C0, D02NE23019C0, D02NE22029C0, D02NE26017C0, D02NE26003C0, D02NE27030C0, D02NE26019C0, D02NE11005C0 |  |  |  |  | 10.28d | 0d | TESTING & COMMISSIONING [2549 h]; Cost |  |  | D02TS01801C0 | DT | C | 02 | TS | SC | 018 | 01 | BILL 5 | B05 | S2 | 01 | R00 | ACF07 | 018 |  |  |  |  |  |  |  |  |  |  |  |  |  |  |  |  |  |  |
| D02TS01808C0 |  | DT-02 ; Touch-up & Clean / JV inspection /CIR /De-snag | 18d | 2012-11-21 | 2012-12-13 | D02NE06101C0, D02NE06102C0, D02NE08709C0, D02NE09305C0, D02NE09601C0, D02NE09701C0, D02NE09903C0, D02NE09907C0, D02NE11001C0, D02NE11003C0, D02TS01801C0, D02NE05501C0, D02NE09503C0, D02AR09677C1, D03AR09678C1 |  |  |  |  | 10.28d | 0d | TESTING & COMMISSIONING [213 h]; Cost |  |  | D02TS01802C0 | DT | C | 02 | TS | SC | 018 | 02 | BILL 5 | B05 | S2 | 02 | R00 | ACF07 | 018 |  |  |  |  |  |  |  |  |  |  |  |  |  |  |  |  |  |  |
| D02TS01813C0 |  | DT-02 ; Consultant's final de-snag inspection | 7.12d | 2012-12-13 | 2012-12-22 | D02TS01808C0 |  |  |  |  | 10.28d | 0d | Labor General [1 h]; Cost |  |  | D02TS01803C0 | DT | C | 02 | TS | SC | 018 | 03 | BILL 5 | B05 | S2 | 03 | R00 | ACF07 | 018 |  |  |  |  |  |  |  |  |  |  |  |  |  |  |  |  |  |  |
|  | 03 | **Cv Or , Pat Hold , Prep/Recv** |  | 2011-03-09 | 2012-12-22 |  |  |  |  |  |  |  |  |  |  |  |  |  |  |  |  |  |  |  |  |  |  |  |  |  |  |  |  |  |  |  |  |  |  |  |  |  |  |  |  |  |  |  |
| D02CV21111C0 |  | DT-02 ; 1st Fix, Inst of Sprinkler main pipe (Prep/Recv) | 44d | 2011-03-09 A | 2011-06-13 A | D02CV22019C0 SS+10d, D02CV23001C0, D02S107807C0, D02S207807C0 | 100% |  | 2011-05-17 | 2011-07-09 |  |  | MECHANICAL [981.6 h]; Cost [53543.7 AED] | 53,543.69 | 53,543.69 | D02CV21111C0 | DT | C | 02 | CV | ME | 211 | 11 | BILL 5 | B05 | S2 | 1F | R00 | ACF04 | 211 | 80 | 12428.23 | 1S | MEP | M1F |  |  |  |  |  |  |  |  |  |  |  |  |  |
| D02CV22019C0 |  | DT-02 ; 1st Fix, Inst of Drainage pipe (ceiling) (Prep/Recv) | 62d | 2011-03-09 A | 2011-06-25 A | D02CV23001C0, D02CV27010C0 SS+10d, D02S107807C0, D02S207807C0 | 100% |  | 2011-05-05 | 2011-07-18 |  |  | PLUMBING [1173.6 h]; Cost [61888.2 AED] | 61,888.15 | 61,888.15 | D02CV22019C0 | DT | C | 02 | CV | ME | 220 | 19 | BILL 5 | B05 | S2 | 1F | R00 | ACF04 | 220 | 70 | 22050.42 | 1S | MEP | M1F |  |  |  |  |  |  |  |  |  |  |  |  |  |
| D02CV23001C0 |  | DT-02 ; 1st Fix, Inst. of Supports for MEP (Prep/Recv) | 27d | 2011-03-28 A | 2011-06-02 A | D02S107807C0 SS, D02S207807C0 SS | 100% |  | 2011-03-12 | 2011-04-12 |  |  | MECHANICAL [1338 h]; Cost [75432.9 AED] | 75,432.94 | 75,432.94 | D02CV23001C0 | DT | C | 02 | CV | ME | 230 | 01 | BILL 5 | B05 | S2 | 1F | R00 | ACF04 | 230 | 90 | 8750.22 | 1S | MEP | M1F |  |  |  |  |  |  |  |  |  |  |  |  |  |
| D02CV09201C0 |  | DT-02 ; Metal Studs (Prep/Recv) | 90d | 2011-04-12 A | 2011-11-24 | D02CV23001C0, D02PA09201C0 | 78% | 19.8d | 2011-06-16 | 2011-10-02 | 10.4d | 0d | PARTITIONS [9267 h]; PARTITIONS - Metal Studs [1590 m]; Cost |  |  | D02CV09201C0 | DT | C | 02 | CV | PT | 092 | 01 | BILL 5 | B05 | S2 | 1F | R00 | ACF06 | 092 | 40 | 118830.4 |  | GP | PMS | 0 | 0 | 0 | 0 | 313 | 944 | 75 | 67 |  |  |  |  |  |
| D02CV21117C0 |  | DT-02 ; 1st Fix, Inst of Sprinkler branch pipe (Prep/Recv) | 250d | 2011-04-19 A | 2012-01-02 | D02CV09201C0, D02CV21111C0, D02CV05503C0 FF+18d | 90% | 25d | 2011-07-23 | 2012-05-19 | 83.12d | 72.6d | MECHANICAL [1441.2 h]; Cost [78749.8 AED] | 78,749.79 | 70,874.81 | D02CV21117C0 | DT | C | 02 | CV | ME | 211 | 17 | BILL 5 | B05 | S2 | 1F | R00 | ACF04 | 211 | 75 | 4564.55 | 1S | MEP | M1F |  |  |  |  |  |  |  |  | 90 | 98 |  |  |  |
| D02CV26001C0 |  | DT-02 ; 1st Fix, Inst of Trunking/Conduiting (Prep/Recv) | 100d | 2011-04-21 A | 2011-11-03 | D02CV23001C0, D02S107807C0, D02S207807C0 | 70% | 30d | 2011-04-12 | 2011-08-08 | 65.12d | 0d | ELECTRICAL [824.4 h]; Cost [42423.2 AED] | 42,423.24 | 29,696.27 | D02CV26001C0 | DT | C | 02 | CV | ME | 260 | 01 | BILL 5 | B05 | S2 | 1F | R00 | ACF04 | 260 | 30 | 27492.85 | 1S | MEP | M1F |  |  |  |  |  |  |  |  |  | 90 |  |  |  |
| D02CV27010C0 |  | DT-02 ; 1st Fix, Inst of Trunking for ELV system (Prep/Recv) | 100d | 2011-04-24 A | 2011-11-03 | D02CV23001C0, D02CV26001C0 SS+10d, D02S107807C0, D02S207807C0 | 70% | 30d | 2011-04-24 | 2011-08-20 | 65.12d | 0d | ELECTRICAL [1689.6 h]; Cost [88597.9 AED] | 88,597.89 | 62,018.53 | D02CV27010C0 | DT | C | 02 | CV | ME | 270 | 10 | BILL 5 | B05 | S2 | 1F | R00 | ACF04 | 270 | 20 | 71948.77 | 1S | MEP | M1F |  |  |  |  |  |  |  |  |  | 95 |  |  |  |
| D02CV26013C0 |  | DT-02 ; 1st Fix, Inst of Cable Tray (Prep/Recv) | 100d | 2011-05-02 A | 2011-11-03 | D02CV23001C0, D02CV27010C0 SS+4d, D02S107807C0, D02S207807C0 | 70% | 30d | 2011-04-28 | 2011-08-24 | 80.12d | 0d | ELECTRICAL [430.8 h]; Cost [23263.3 AED] | 23,263.34 | 16,284.34 | D02CV26013C0 | DT | C | 02 | CV | ME | 260 | 13 | BILL 5 | B05 | S2 | 1F | R00 | ACF04 | 260 | 20 | 17551.36 | 1S | MEP | M1F |  |  |  |  |  |  |  |  |  | 90 |  |  |  |
| D02CV22005C0 |  | DT-02 ; 1st Fix, Inst of Water supply pipe (ceiling) (Prep/Recv) | 90d | 2011-05-10 A | 2011-11-24 | D02CV22019C0 SS+7d, D02CV23001C0, D02S107807C0, D02S207807C0 | 50% | 45d | 2011-06-02 | 2011-09-19 | 65.12d | 54.6d | PLUMBING [4896 h]; Cost [264473 AED] | 264,473.49 | 132,236.74 | D02CV22005C0 | DT | C | 02 | CV | ME | 220 | 05 | BILL 5 | B05 | S2 | 1F | R00 | ACF04 | 220 | 25 |  | 1S | MEP | M1F |  |  |  |  |  |  |  |  |  | 85 |  |  |  |
| D02CV27001C0 |  | DT-02 ; 1st Fix, Wiring/ Cabling work (Prep/Recv) | 78d | 2011-05-10 A | 2012-01-18 | D02CV26001C0, D02CV26013C0, D02CV27010C0 | 25% | 58.5d | 2011-07-12 | 2011-10-13 | 99.62d | 89.1d | ELECTRICAL [436.8 h]; Cost [21894.9 AED] | 21,894.91 | 5,473.73 | D02CV27001C0 | DT | C | 02 | CV | ME | 270 | 01 | BILL 5 | B05 | S2 | 1F | R00 | ACF04 | 270 | 20 | 7737.97 | 1S | MEP | M1F |  |  |  |  |  |  |  |  |  | 50 |  |  |  |
| D02CV09203C0 |  | DT-02 ; Partitions 1st face (Prep/Recv) | 90d | 2011-05-15 A | 2011-12-28 | D02CV09201C0 SS+12d, D02CV23023C0 FF, D02CV26001C0 FF, D02CV26013C0 FF | 59% | 36.9d | 2011-06-15 | 2011-10-02 | 38.12d | 27.6d | PARTITIONS [1590 m]; PARTITIONS [7253 h]; Cost |  |  | D02CV09203C0 | DT | C | 02 | CV | PT | 092 | 03 | BILL 5 | B05 | S2 | 2F | R00 | ACF06 | 092 | 10 | 91499.41 |  | GP | P1F | 0 | 0 | 0 | 0 | 314 | 945 | 50 | 27 |  |  |  |  |  |
| D02CV23015C0 |  | DT-02 ; 2nd Fix, Insulation of CHW pipe & Duct (Prep/Recv) | 90d | 2011-05-15 A | 2012-03-18 | D02CV23009C0, D02CV23017C0, D02CV23023C0 | 65% | 31.5d | 2011-09-06 | 2011-12-26 | 49.23d | 38.7d | MECHANICAL [5311.2 h]; Cost [286617 AED] | 286,617.06 | 186,301.09 | D02CV23015C0 | DT | C | 02 | CV | ME | 230 | 15 | BILL 5 | B05 | S2 | 2F | R00 | ACF07 | 230 | 10 |  | 2n | MEP |  | 0 | 0 | 0 | 0 |  |  | 60 | 35 |  | 85 |  |  |  |
| D02CV23017C0 |  | DT-02 ; 1st Fix, Inst of CHW pipe (Prep/Recv) | 120d | 2011-05-15 A | 2012-01-02 | D02CV21111C0 SS+10d, D02CV23001C0, D02S107807C0, D02S207807C0, D02CV05503C0 FF+18d | 75% | 30d | 2011-06-02 | 2011-10-24 | 23.43d | 0d | MECHANICAL [6325.2 h]; Cost [345418 AED] | 345,418.28 | 259,063.71 | D02CV23017C0 | DT | C | 02 | CV | ME | 230 | 17 | BILL 5 | B05 | S2 | 1F | R00 | ACF04 | 230 | 35 | 60097.83 | 1S | MEP | M1F |  |  |  |  |  |  |  |  |  | 85 |  |  |  |
| D02CV23023C0 |  | DT-02 ; 1st Fix, Inst of Main Ducting (Prep/Recv) | 180d | 2011-05-15 A | 2011-12-28 | D02CV23001C0, D02CV23017C0 SS+7d, D02S107807C0, D02S207807C0 | 85% | 27d | 2011-06-11 | 2012-01-17 | 23.43d | 0d | MECHANICAL [11402.4 h]; Cost [622619 AED] | 622,619.08 | 529,226.22 | D02CV23023C0 | DT | C | 02 | CV | ME | 230 | 23 | BILL 5 | B05 | S2 | 1F | R00 | ACF04 | 230 | 25 | 433312.5 | 1S | MEP | M1F |  |  |  |  |  |  |  |  |  | 85 |  |  |  |
| D02CV22007C0 |  | DT-02 ; 1st Fix, Inst of Medical Gas pipe (Prep/Recv) | 100d | 2011-06-02 A | 2011-11-03 | D02CV21111C0 SS+14d, D02CV23001C0, D02S107807C0, D02S207807C0 | 70% | 30d | 2011-06-02 | 2011-10-01 | 65.12d | 45d | PLUMBING [1616.4 h]; Cost [83529.6 AED] | 83,529.57 | 58,470.7 | D02CV22007C0 | DT | C | 02 | CV | ME | 220 | 07 | BILL 5 | B05 | S2 | 1F | R00 | ACF04 | 220 |  | 87125.6 | 1S | MEP | M1F |  |  |  |  |  |  |  |  |  | 90 |  |  |  |
| D02CV22015C0 |  | DT-02 ; 2nd Fix, Medical Gas pipe (Prep/Recv) | 60d | 2011-06-07 A | 2012-01-12 | D02CV09201C0, D02CV22007C0 SS | 35% | 39d | 2011-08-04 | 2011-10-16 | 20.12d | 9.6d | PLUMBING [1616.4 h]; Cost [83529.6 AED] | 83,529.57 | 29,235.35 | D02CV22015C0 | DT | C | 02 | CV | ME | 220 | 15 | BILL 5 | B05 | S2 | 2F | R00 | ACF07 | 220 |  | 33882.18 | 2n | MEP |  |  |  |  |  |  |  |  |  |  | 35 |  |  |  |
| D02CV26009C0 |  | DT-02 ; 2nd Fix, Inst of Wall conduites (Prep/Recv) | 54d | 2011-06-13 A | 2012-01-24 | D02CV09201C0 | 10% | 48.6d | 2011-06-13 | 2011-08-16 | 10.53d | 0d | ELECTRICAL [824.4 h]; Cost [42423.2 AED] | 42,423.24 | 4,242.32 | D02CV26009C0 | DT | C | 02 | CV | ME | 260 | 09 | BILL 5 | B05 | S2 | 2F | R00 | ACF07 | 260 |  | 4998.66 | 2n | MEP |  |  |  |  |  |  |  |  |  |  | 15 |  |  |  |
| D02CV22011C0 |  | DT-02 ; 2nd Fix, Drainage/Water pipe (wall) (Prep/Recv) | 54d | 2011-08-10 A | 2012-01-18 | D02CV09201C0, DAFMI22002R20 FS+65d | 20% | 43.2d | 2011-12-29 | 2012-03-03 | 15.93d | 5.4d | PLUMBING [1173.6 h]; Cost [61888.2 AED] | 61,888.15 | 12,377.63 | D02CV22011C0 | DT | C | 02 | CV | ME | 220 | 11 | BILL 5 | B05 | S2 | 2F | R00 | ACF07 | 220 |  |  | 2n | MEP |  |  |  |  |  |  |  | 20 | 0 |  | 25 |  |  |  |
| D02CV05503C0 |  | DT-02 ; Ceiling Support for medical equipment (Prep/Recv) | 24d | 2011-09-05 A | 2011-12-11 | D02CV09201C0, DAFMI22002R20 FS+65d | 50% | 12d | 2011-12-04 | 2011-12-31 | 23.43d | 0d | SECONDARY STEEL [207 h]; STRUCTURAL STEEL [22 T(Fe)]; Cost |  |  | D02CV05503C0 | DT | C | 02 | CV | SW | 055 | 03 | BILL 5 | B05 | S2 | 03 | R00 | ACF03 | b |  |  |  |  |  |  |  |  |  | 335 | 962 |  |  |  |  |  |  |  |
| D02CV23008C0 |  | DT-02 ; 1st Fix, Inst of VCD's/FD's (Prep/Recv) | 66d | 2011-09-05 A | 2012-03-13 | D02CV23023C0, D02CV05503C0 FF+18d | 5% | 62.7d | 2011-10-03 | 2011-12-24 | 23.43d | 12.9d | MECHANICAL [4312.8 h]; Cost [232964 AED] | 232,964.23 | 11,648.21 | D02CV23008C0 | DT | C | 02 | CV | ME | 230 | 08 | BILL 5 | B05 | S2 | 1F | R00 | ACF04 | 230 |  |  | 1S | MEP | M1F |  |  |  |  |  |  |  |  |  | 90 |  |  |  |
| D02CV23009C0 |  | DT-02 ; 2nd Fix, Inst of VAV'S CHW connection (Prep/Recv) | 36d | 2011-09-05 A | 2012-02-11 | D02CV23017C0 | 10% | 32.4d | 2011-10-06 | 2011-11-20 | 49.23d | 0d | MECHANICAL [1684.8 h]; Cost [91006.1 AED] | 91,006.06 | 9,100.61 | D02CV23009C0 | DT | C | 02 | CV | ME | 230 | 09 | BILL 5 | B05 | S2 | 2F | R00 | ACF07 | 230 |  |  | 2n | MEP |  |  |  |  |  |  |  |  |  |  | 20 |  |  |  |
| D02CV05511C0 |  | DT-02 ; Wall reinforcement for MEP/Medical (Prep/Recv) | 23.88d | 2011-12-07 | 2012-01-04 | D02CV09201C0, DAFMI22002R02 FS+65d |  |  |  |  | 33.25d | 22.73d | SECONDARY STEEL [67 h]; Cost |  |  | D02CV05511C0 | DT | C | 02 | CV | SW | 055 | 11 | BILL 5 | B05 | S2 | 03 | R00 | ACF03 | b |  |  |  |  |  |  |  |  |  |  |  |  |  |  |  |  |  |  |
| D02CV08103C0 |  | DT-02 ; Door Frames (Prep/Recv) | 42d | 2011-12-08 | 2012-01-26 | D02CV09201C0 SS+14d, GNHE08101C0 FS+93d, D02NE08103C0 SS+3d |  |  |  |  | 48d | 0d | ASSORTED DOORS [883 h]; Cost |  |  | D02CV08103C0 | DT | C | 02 | CV | DO | 081 | 03 | BILL 5 | B05 | S2 | DF | R00 | ACF06 | 081 |  |  |  |  |  |  |  |  |  | 316 | 947 |  |  |  |  | 08 |  |  |
| D02CV01005C0 |  | DT-02 ; 2nd, Wall Inspection by Consultant (Prep/Recv) | 6d | 2012-01-24 | 2012-01-31 | D02CV22011C0, D02CV22015C0, D02CV26009C0 |  |  |  |  | 10.53d | 0d | Labor General [1.2 h]; Cost |  |  | D02CV01005C0 | DT | C | 02 | CV | ME | 010 | 05 | BILL 5 | B05 | S2 | WI | R00 | ACF07 | 010 |  |  | 2n | MEP |  |  |  |  |  |  |  |  |  |  |  |  |  |  |
| D02CV09205C0 |  | DT-02 ; Partitions Closing (Prep/Recv) | 48d | 2012-01-31 | 2012-03-28 | D02CV01005C0, D02CV05511C0, D02CV09203C0, D02CV22005C0, D02CV22019C0, DAFOA09206C1 FF, D02CV08103C0 FF, D02CV21117C0 FF, D02CV23008C0 FF, DAFMI22002R20 FS+65d |  |  |  |  | 10.53d | 0d | PARTITIONS [1590 m]; PARTITIONS [9295 h]; Cost |  |  | D02CV09205C0 | DT | C | 02 | CV | PT | 092 | 05 | BILL 5 | B05 | S2 | FF | R00 | ACF06 | 092 |  |  |  | GP | P2F |  |  |  |  | 315 | 946 |  |  |  |  |  |  |  |
| D02CV07103C0 |  | DT-02 ; Waterproofing (Prep/Recv) | 12d | 2012-03-28 | 2012-04-11 | D02CV08103C0, D02CV09205C0 |  |  |  |  | 64.53d | 54d | THERMAL & MOISTURE [664 h]; THERMAL & MOISTURE [4391 m2]; Cost |  |  | D02CV07103C0 | DT | C | 02 | CV | FF | 071 | 03 | BILL 5 | B05 | S2 | 01 | R00 | ACF03 | 071 |  |  |  |  |  |  |  |  |  | 105 | 999 |  |  |  |  |  |  |  |
| D02CV09901C0 |  | DT-02 ; Wall Prime & 1st coat (Prep/Recv) | 30d | 2012-03-28 | 2012-05-02 | D02CV09205C0 |  |  |  |  | 10.53d | 0d | WALL PAINT [1569 h]; WALL PAINT [1957 m2]; Cost |  |  | D02CV09901C0 | DT | C | 02 | CV | PA | 099 | 01 | BILL 5 | B05 | S2 | 01 | R00 | ACF06 | 099 |  |  |  |  |  |  |  |  |  | 328 | 956 |  |  |  |  |  |  |  |
| D02CV26005C0 |  | DT-02 ; 2nd Fix, Wiring for Power/Lighting/Emergency (Prep/Recv) | 36d | 2012-03-28 | 2012-05-09 | D02CV09205C0 |  |  |  |  | 76.53d | 0d | ELECTRICAL [436.8 h]; Cost |  |  | D02CV26005C0 | DT | C | 02 | CV | ME | 260 | 05 | BILL 5 | B05 | S2 | 2F | R00 | ACF07 | 260 |  |  | 2n | MEP |  |  |  |  |  |  |  |  |  |  |  |  |  |  |
| D02CV26007C0 |  | DT-02 ; 2nd Fix, Cable Pulling (Prep/Recv) | 42d | 2012-03-28 | 2012-05-16 | D02CV09201C0 SS+6d, D02CV09205C0 |  |  |  |  | 124.53d | 114d | ELECTRICAL [6634.8 h]; Cost |  |  | D02CV26007C0 | DT | C | 02 | CV | ME | 260 | 07 | BILL 5 | B05 | S2 | 2F | R00 | ACF07 | 260 |  |  | 2n | MEP |  |  |  |  |  |  |  |  |  |  | 25 |  |  |  |
| D02CV26011C0 |  | DT-02 ; 2nd Fix, Inst of Equipment (DB) (Prep/Recv) | 48d | 2012-03-28 | 2012-05-23 | D02CV09205C0 |  |  |  |  | 70.53d | 54d | ELECTRICAL [4054.8 h]; Cost |  |  | D02CV26011C0 | DT | C | 02 | CV | ME | 260 | 11 | BILL 5 | B05 | S2 | 2F | R00 | ACF04 | 260 |  |  | 2n | MEP |  |  |  |  |  |  |  |  |  |  |  |  | E |  |
| D02CV26053C0 |  | DT-02 ; 2nd Fix, Wiring / Cabling (Prep/Recv) | 36d | 2012-03-28 | 2012-05-09 | D02CV26009C0, D02CV09205C0 |  |  |  |  | 130.53d | 120d | ELECTRICAL [436.8 h]; Cost |  |  | D02CV26053C0 | DT | C | 02 | CV | ME | 260 | 53 | BILL 5 | B05 | S2 | 2F | R00 | ACF07 | 260 |  |  | 2n | MEP |  |  |  |  |  | 389 | 977 |  |  |  |  |  |  |  |
| D02CV27020C0 |  | DT-02 ; 2nd Fix, Inst of ELV Equipment (Panels) (Prep/Recv) | 42d | 2012-03-28 | 2012-05-16 | D02CV09205C0 |  |  |  |  | 76.53d | 60d | ELECTRICAL [1723.2 h]; Cost |  |  | D02CV27020C0 | DT | C | 02 | CV | ME | 270 | 20 | BILL 5 | B05 | S2 | 2F | R00 | ACF04 | 270 |  |  | 2n | MEP |  |  |  |  |  |  |  |  |  |  |  |  | E |  |
| D02CV05501C0 |  | DT-02 ; Handrails & balustrade (Prep/Recv) | 35.88d | 2012-05-02 | 2012-06-13 | D02CV09901C0 |  |  |  |  | 46.65d | 36.12d | SECONDARY STEEL [321 h]; Cost |  |  | D02CV05501C0 | DT | C | 02 | CV | SW | 055 | 01 | BILL 5 | B05 | S2 | 01 | R00 | ACF03 | a |  |  |  |  |  |  |  |  |  |  |  |  |  |  |  |  |  |  |
| D02CV09501C0 |  | DT-02 ; Ceiling Grid and Service Tile (Prep/Recv) | 36d | 2012-05-02 | 2012-06-13 | D02CV05503C0, D02CV09205C0 SS+15d, D02CV21117C0, D02CV23008C0, D02CV23009C0, D02CV23015C0, D02CV27001C0, DAFMI22003R02 FS+65d, D02CV09901C0 |  |  |  |  | 10.53d | 0d | CEILING GRID FOR GYPSUM [5766.08 h]; CEILING GRID FOR GYPSUM [493.4 m2]; Cost |  |  | D02CV09501C0 | DT | C | 02 | CV | CE | 095 | 01 | BILL 5 | B05 | S2 | 01 | R00 | ACF06 | 095 |  |  |  |  |  |  |  |  |  | 323 | 952 |  |  |  |  |  |  | R3 |
| D02CV26015C0 |  | DT-02 ; Final Fix, Termination & Gladding of Cables (Prep/Recv) | 48d | 2012-05-09 | 2012-07-05 | D02CV26005C0 |  |  |  |  | 76.53d | 66d | ELECTRICAL [368.4 h]; Cost |  |  | D02CV26015C0 | DT | C | 02 | CV | ME | 260 | 15 | BILL 5 | B05 | S2 | FF | R00 | ACF07 | 260 |  |  | FF | MEP |  |  |  |  |  |  |  |  |  |  |  |  |  |  |
| D02CV09305C0 |  | DT-02 ; Flooring (Terrazzo) (Prep/Recv) | 36d | 2012-06-13 | 2012-07-26 | D02CV07103C0, D02CV09501C0 |  |  |  |  | 10.53d | 0d | TERRAZO FLOOR [520 m2]; TERRAZO FLOOR [936 h]; Cost |  |  | D02CV09305C0 | DT | C | 02 | CV | FF | 096 | 05 | BILL 5 | B05 | S2 | 07 | R00 | ACF06 | TZ |  |  |  |  |  |  |  |  |  | 106 | 1000 |  |  |  |  |  |  |  |
| D02CV09601C0 |  | DT-02 ; Flooring (Rubber & etc) (Prep/Recv) | 36d | 2012-06-13 | 2012-07-26 | D02CV09901C0, D02CV09501C0, D02CV05501C0 FF |  |  |  |  | 10.53d | 0d | RUBBER FLOOR [392 h]; RUBBER FLOOR [980 m2]; Cost |  |  | D02CV09601C0 | DT | C | 02 | CV | FF | 096 | 01 | BILL 5 | B05 | S2 | 03 | R00 | ACF06 | RF |  |  |  |  |  |  |  |  |  | 326 | 955 |  |  |  |  |  |  |  |
| D02CV09905C0 |  | DT-02 ; Ceiling Prime & 1st coat (Prep/Recv) | 36d | 2012-06-13 | 2012-07-26 | D02CV09501C0 |  |  |  |  | 70.53d | 0d | ASSORTED CEILING FINISH [207 h]; Cost |  |  | D02CV09905C0 | DT | C | 02 | CV | PA | 099 | 05 | BILL 5 | B05 | S2 | 01 | R00 | ACF06 | 099 |  |  |  |  |  |  |  |  |  | 330 | 958 |  |  |  |  |  |  |  |
| D02CV21115C0 |  | DT-02 ; 2nd Fix, Inst of Sprinkler droppers (Prep/Recv) | 36d | 2012-06-13 | 2012-07-26 | D02CV09501C0 |  |  |  |  | 40.52d | 0d | MECHANICAL [2067.6 h]; Cost |  |  | D02CV21115C0 | DT | C | 02 | CV | ME | 211 | 15 | BILL 5 | B05 | S2 | 2F | R00 | ACF07 | 211 |  |  | 2n | MEP |  |  |  |  |  |  |  |  |  |  |  |  |  |  |
| D02CV23021C0 |  | DT-02 ; 2nd Fix, Inst of Flexible Duct & Plenum boxes (Prep/Recv) | 36d | 2012-06-13 | 2012-07-26 | D02CV09205C0, D02CV09501C0 |  |  |  |  | 28.52d | 0d | MECHANICAL [274.8 h]; Cost |  |  | D02CV23021C0 | DT | C | 02 | CV | ME | 230 | 21 | BILL 5 | B05 | S2 | 2F | R00 | ACF07 | 230 |  |  | 2n | MEP |  |  |  |  |  |  |  |  |  |  |  |  |  |  |
| D02CV26017C0 |  | DT-02 ; Final Fix, Inst of Ceiling rose (Prep/Recv) | 48d | 2012-06-13 | 2012-08-09 | D02CV09501C0 |  |  |  |  | 39.52d | 0d | ELECTRICAL [67.2 h]; Cost |  |  | D02CV26017C0 | DT | C | 02 | CV | ME | 260 | 17 | BILL 5 | B05 | S2 | FF | R00 | ACF07 | 260 |  |  | FF | MEP |  |  |  |  |  |  |  |  |  |  |  |  |  |  |
| D02CV27002C0 |  | DT-02 ; 2nd Fix, Wiring Droppers (Prep/Recv) | 36d | 2012-06-13 | 2012-07-26 | D02CV09501C0 |  |  |  |  | 34.52d | 0d | ELECTRICAL [436.8 h]; Cost |  |  | D02CV27002C0 | DT | C | 02 | CV | ME | 270 | 02 | BILL 5 | B05 | S2 | 2F | R00 | ACF07 | 270 |  |  | 2n | MEP |  |  |  |  |  |  |  |  |  |  |  |  |  |  |
| D02CV21113C0 |  | DT-02 ; Final Fix, Inst of Sprinklers head/ Extinguisher (Prep/Recv) | 48d | 2012-06-21 | 2012-08-16 | D02CV09501C0, D02CV21115C0 SS+6d |  |  |  |  | 40.52d | 30d | MECHANICAL [403.2 h]; Cost |  |  | D02CV21113C0 | DT | C | 02 | CV | ME | 211 | 13 | BILL 5 | B05 | S2 | FF | R00 | ACF07 | 211 |  |  | FF | MEP |  |  |  |  |  |  |  |  |  |  |  |  |  |  |
| D02CV23019C0 |  | DT-02 ; Final Fix, Inst of Grilles & Diffusers (Prep/Recv) | 60d | 2012-06-21 | 2012-09-02 | D02CV09501C0, D02CV23021C0 SS+6d |  |  |  |  | 28.52d | 18d | MECHANICAL [2560.8 h]; Cost |  |  | D02CV23019C0 | DT | C | 02 | CV | ME | 230 | 19 | BILL 5 | B05 | S2 | FF | R00 | ACF07 | 230 |  |  | FF | MEP |  |  |  |  |  |  |  |  |  |  |  |  |  |  |
| D02CV27030C0 |  | DT-02 ; Final Fix, Inst of ELV device (Detector/Speaker) (Prep/Recv) | 54d | 2012-06-21 | 2012-08-26 | D02CV09501C0, D02CV27002C0 SS+6d |  |  |  |  | 34.52d | 24d | ELECTRICAL [2152.8 h]; Cost |  |  | D02CV27030C0 | DT | C | 02 | CV | ME | 270 | 30 | BILL 5 | B05 | S2 | FF | R00 | ACF07 | 270 |  |  | FF | MEP |  |  |  |  |  |  |  |  |  |  |  |  |  |  |
| D02CV26003C0 |  | DT-02 ; Final Fix, Inst of Light fittings (Prep/Recv) | 48d | 2012-06-23 | 2012-08-18 | D02CV09501C0, D02CV26017C0 SS+7d |  |  |  |  | 39.52d | 29d | ELECTRICAL [6626.4 h]; Cost |  |  | D02CV26003C0 | DT | C | 02 | CV | ME | 260 | 03 | BILL 5 | B05 | S2 | FF | R00 | ACF07 | 260 |  |  | FF | MEP |  |  |  |  |  |  |  |  |  |  |  |  |  |  |
| D02CV06101C0 |  | DT-02 ; Wood / caseworks (Prep/Recv) | 48d | 2012-07-26 | 2012-09-23 | D02CO04415C0, D02CV09501C0, D02CV09901C0, D02CO04437C0, DAFWA00111M0, CAFWA00113M0, DAFMI22003R02 FS+184d, D02CV09601C0, D02CV09305C0 |  |  |  |  | 10.53d | 0d | WOOD WORK/CASEWORK [671.13 no]; WOOD WORK/CASEWORK [5627 h]; Cost |  |  | D02CV06101C0 | DT | C | 02 | CV | WO | 061 | 01 | BILL 5 | B05 | S2 | WW | R00 | ACF06 | 061 |  |  |  |  |  |  |  |  |  | 332 | 960 |  |  |  |  |  |  |  |
| D02CV06102C0 |  | DT-02 ; Head Wall (Prep/Recv) | 35.25d | 2012-07-26 | 2012-09-08 | D02CO04415C0, D02CV09501C0, D02CV06101C0 SS, DAFWA00111M0, DAFMI22003R02 FS+184d |  |  |  |  | 71.28d | 60.75d | WOOD WORK/CASEWORK [3704 h]; Cost |  |  | D02CV06102C0 | DT | C | 02 | CV | WO | 061 | 02 | BILL 5 | B05 | S2 | WW | R00 | ACF06 | 061 |  |  |  |  |  |  |  |  |  | 332 | 960 |  |  |  |  |  |  |  |
| D02CV08107C0 |  | DT-02 ; Doors (Prep/Recv) | 42d | 2012-07-26 | 2012-09-16 | D02CV08103C0, D02CV09901C0, D02CV09305C0, D02CV09601C0 |  |  |  |  | 36.77d | 0d | ASSORTED DOORS [1420 h]; ASSORTED DOORS [142 no]; Cost |  |  | D02CV08107C0 | DT | C | 02 | CV | DO | 081 | 07 | BILL 5 | B05 | S2 | DR | R00 | ACF06 | 081 |  |  |  |  |  |  |  |  |  | 317 | 948 |  |  |  |  | 08 |  |  |
| D02CV09701C0 |  | DT-02 ; Wall finishes (ST, WD, WC) (Prep/Recv) | 48d | 2012-07-26 | 2012-09-23 | D02CV26011C0, D02CV27020C0, DAFMI22003R02 FS+164d, D02CV09601C0, D02CV09305C0 |  |  |  |  | 16.52d | 0d | ASSORTED WALL FINISH [2086 h]; ASSORTED WALL FINISH [2397 m2]; Cost |  |  | D02CV09701C0 | DT | C | 02 | CV | WF | 097 | 01 | BILL 5 | B05 | S2 | 01 | R00 | ACF06 | 097 |  |  |  |  |  |  |  |  |  | 105 | 1002 |  |  |  |  |  |  | R3 |
| D02CV09903C0 |  | DT-02 ; Wall Final Paint (Prep/Recv) | 36d | 2012-07-26 | 2012-09-09 | D02CV09901C0, D02CV09905C0 |  |  |  |  | 70.53d | 48d | WALL PAINT [845 h]; WALL PAINT [1054 m2]; Cost |  |  | D02CV09903C0 | DT | C | 02 | CV | PA | 099 | 03 | BILL 5 | B05 | S2 | 02 | R00 | ACF06 | 099 |  |  |  |  |  |  |  |  |  | 329 | 957 |  |  |  |  |  |  |  |
| D02CV22025C0 |  | DT-02 ; Final Fix, Inst of Sanitary Ware (Prep/Recv) | 48d | 2012-07-26 | 2012-09-23 | D02CV09205C0, D02CV09305C0, A10230 FS+148d |  |  |  |  | 39.52d | 0d | PLUMBING [1917.6 h]; Cost |  |  | D02CV22025C0 | DT | C | 02 | CV | ME | 220 | 25 | BILL 5 | B05 | S2 | FF | R00 | ACF07 | 220 |  |  | FF | MEP |  |  |  |  |  |  |  |  |  |  |  |  |  |  |
| D02CV11005C0 |  | DT-02 ; Utility belt (Prep/Recv) | 24d | 2012-08-02 | 2012-09-02 | D02CV06101C0 SS+6d, D02CV09205C0 |  |  |  |  | 10.53d | 0d | FF&E [145 h]; FF&E [76.91 no]; Cost |  |  | D02CV11005C0 | DT | C | 02 | CV | WO | 110 | 05 | BILL 5 | B05 | S2 | 05 | R00 | ACF08 | e |  |  |  |  |  |  |  |  |  |  |  |  |  |  |  |  |  |  |
| D02CV22021C0 |  | DT-02 ; Final Fix, Terminate Sanitary Ware & Appliances (Prep/Recv) | 48d | 2012-08-04 | 2012-10-01 | D02CV22011C0, D02CV22025C0 SS+7d |  |  |  |  | 39.52d | 29d | PLUMBING [1917.6 h]; Cost |  |  | D02CV22021C0 | DT | C | 02 | CV | ME | 220 | 21 | BILL 5 | B05 | S2 | FF | R00 | ACF07 | 220 |  |  | FF | MEP |  |  |  |  |  |  |  |  |  |  |  |  |  |  |
| D02CV22029C0 |  | DT-02 ; Final Fix, Medical Gas pipe (Prep/Recv) | 18d | 2012-09-02 | 2012-09-23 | D02CV09501C0, D02CV09501C0 FF, D02CV11005C0 |  |  |  |  | 10.53d | 0d | PLUMBING [1616.4 h]; Cost |  |  | D02CV22029C0 | DT | C | 02 | CV | ME | 220 | 29 | BILL 5 | B05 | S2 | FF | R00 | ACF07 | 220 |  |  | FF | MEP |  |  |  |  |  |  |  |  |  |  |  |  |  |  |
| D02CV08709C0 |  | DT-02 ; Ironmongery (Prep/Recv) | 27.75d | 2012-09-16 | 2012-10-18 | D02CV08107C0 |  |  |  |  | 36.77d | 26.25d | IRONMONGERY [670 h]; IRONMONGERY [67 no]; Cost |  |  | D02CV08709C0 | DT | C | 02 | CV | DO | 087 | 09 | BILL 5 | B05 | S2 | IM | R00 | ACF06 | 087 |  |  |  |  |  |  |  |  |  | 322 | 951 |  |  |  |  | 08 |  |  |
| D02CV01006C0 |  | DT-02 ; 2nd, Ceiling Inspection by Consultants (Prep/Recv) | 6d | 2012-09-23 | 2012-09-30 | D02CV21115C0, D02CV23009C0, D02CV23015C0, D02CV27002C0, D02CV09501C0, D02CV21113C0, D02CV22029C0, D02CV23019C0, D02CV26003C0, D02CV26017C0, D02CV27030C0, D02CV26015C0 |  |  |  |  | 10.53d | 0d | Labor General [1.2 h]; Cost |  |  | D02CV01006C0 | DT | C | 02 | CV | ME | 010 | 06 | BILL 5 | B05 | S2 | CI | R00 | ACF07 | 010 |  |  | 2n | MEP |  |  |  |  |  |  |  |  |  |  |  |  |  |  |
| D02CV11001C0 |  | DT-02 ; Wall Protection (WP, CG, WG, FCG) (Prep/Recv) | 24d | 2012-09-23 | 2012-10-21 | D02CV09701C0, D02CV09903C0 SS |  |  |  |  | 34.52d | 24d | FF&E [2985 h]; Cost |  |  | D02CV11001C0 | DT | C | 02 | CV | WF | 110 | 01 | BILL 5 | B05 | S2 | 03 | R00 | ACF08 | b |  |  |  |  |  |  |  |  |  | 326 | 1001 |  |  |  |  |  |  |  |
| D02CV09503C0 |  | DT-02 ; Ceiling closure - ACT/Gypsum (Prep/Recv) | 18d | 2012-09-30 | 2012-10-21 | D02CV01006C0, D02CV21115C0, D02CV26005C0, D02CV27001C0, D02CV27002C0, DAFOA09505C1 FF, D02CV06101C0, D02CV09701C0, D02CV23021C0, D02CV26053C0, D02CV26007C0 |  |  |  |  | 10.53d | 0d | ASSORTED CEILING FINISH [1168.5 h]; CEILING GYPSUM [161.75 h]; ASSORTED CEILING FINISH [1900 m2]; CEILING GYPSUM [493 m2]; Cost |  |  | D02CV09503C0 | DT | C | 02 | CV | CE | 095 | 03 | BILL 5 | B05 | S2 | 02 | R00 | ACF06 | 095 |  |  |  |  |  |  |  |  |  | 324 | 953 |  |  |  |  |  |  | R3 |
| D02CV09907C0 |  | DT-02 ; Ceiling Final paint (Prep/Recv) | 12d | 2012-10-21 | 2012-11-06 | D02CV09601C0, D02CV09905C0, D02CV09503C0 |  |  |  |  | 22.52d | 12d | ASSORTED CEILING FINISH [113 h]; Cost |  |  | D02CV09907C0 | DT | C | 02 | CV | PA | 099 | 07 | BILL 5 | B05 | S2 | 02 | R00 | ACF06 | 099 |  |  |  |  |  |  |  |  |  | 331 | 959 |  |  |  |  |  |  |  |
| D02CV11003C0 |  | DT-02 ; FF & E (Prep/Recv) | 12d | 2012-10-21 | 2012-11-06 | D02CV09601C0, D02CV09503C0 |  |  |  |  | 22.52d | 12d | FF&E [83 h]; FF&E [43.86 no]; Cost |  |  | D02CV11003C0 | DT | C | 02 | CV | WO | 110 | 03 | BILL 5 | B05 | S2 | 04 | R00 | ACF08 | a |  |  |  |  |  |  |  |  |  | 333 | 961 |  |  |  |  |  |  |  |
| D02CV22027C0 |  | DT-02 ; Final Fix, Inst of All drain (Prep/Recv) | 12d | 2012-10-21 | 2012-11-06 | D02CV09305C0, D02CV09503C0 |  |  |  |  | 10.53d | 0d | PLUMBING [1173.6 h]; Cost |  |  | D02CV22027C0 | DT | C | 02 | CV | ME | 220 | 27 | BILL 5 | B05 | S2 | FF | R00 | ACF07 | 220 |  |  | FF | MEP |  |  |  |  |  |  |  |  |  |  |  |  |  |  |
| D02CV26019C0 |  | DT-02 ; Final Fix, Inst of Switch/Sockets (Prep/Recv) | 12d | 2012-10-21 | 2012-11-06 | D02CV09901C0, D02CV09503C0 |  |  |  |  | 10.53d | 0d | ELECTRICAL [610.8 h]; Cost |  |  | D02CV26019C0 | DT | C | 02 | CV | ME | 260 | 19 | BILL 5 | B05 | S2 | FF | R00 | ACF07 | 260 |  |  | FF | MEP |  |  |  |  |  |  |  |  |  |  |  |  |  |  |

| ID | WBS | Activity | Duration | Start | Finish | Predecessors | Complete | Remaining | Planned start | Planned finish | Total float | Free float | Resources | Cost | Actual cost | change id | CCAD BUILDING(SET) | CCAD PHASE(SET) | CCAD FLOOR(SET) | CCAD ZONE(SET) | CCAD WORK(SET) | CCAD SECTION(SET) | CCAD SERIAL No.(SET) | CCAD CBS(SET) | CCAD BILL(SET) | CCAD HANDOVER(SET) | CCAD TAG(SET) | CCAD REV(SET) | CCADACF (SET) | CCAD SSCF | RENZ % COMPLETE | Claimed This Month | CCAD SUB ZONE MEP(SET) | CCAD CSA | Act Selector % | July2011 Target% Complete | P_811 | P_711 | user_number8 | user_integer1 | user_integer2 | user_number7 | Change Order # | NEW ACTIVITY ID | CCAD DIVISION(SET) | CCAD MEQ |
| --- | --- | --- | --- | --- | --- | --- | --- | --- | --- | --- | --- | --- | --- | --- | --- | --- | --- | --- | --- | --- | --- | --- | --- | --- | --- | --- | --- | --- | --- | --- | --- | --- | --- | --- | --- | --- | --- | --- | --- | --- | --- | --- | --- | --- | --- | --- |
|  | 10 | **Precommissioning Tesing & snagging (Cv Or , Pat Hold , Prep/Recv)** |  | 2012-11-06 | 2012-12-22 |  |  |  |  |  |  |  |  |  |  |  |  |  |  |  |  |  |  |  |  |  |  |  |  |  |  |  |  |  |  |  |  |  |  |  |  |  |  |  |  |  |
| D02TS01804C0 |  | DT-02 ; MEP de-snag, FIREM sign-off | 12d | 2012-11-06 | 2012-11-21 | D02CV11005C0, D02CV22025C0, D02CV22027C0, D02CV26015C0, D02CV22021C0, D02CV21113C0, D02CV23019C0, D02CV22029C0, D02CV26017C0, D02CV26003C0, D02CV27030C0, D02CV26019C0 |  |  |  |  | 10.53d | 0d | TESTING & COMMISSIONING [1275 h]; Cost |  |  | D02TS01801C0 | DT | C | 02 | TS | SC | 018 | 01 | BILL 5 | B05 | S2 | 01 | R00 | ACF07 | 018 |  |  |  |  |  |  |  |  |  |  |  |  |  |  |  |  |
| D02TS01809C0 |  | DT-02 ; Touch-up & Clean / JV inspection /CIR /De-snag | 17.88d | 2012-11-21 | 2012-12-13 | D02CV06101C0, D02CV06102C0, D02CV08709C0, D02CV09305C0, D02CV09601C0, D02CV09701C0, D02CV09903C0, D02CV09907C0, D02CV11001C0, D02CV11003C0, D02TS01804C0, D02CV05501C0, D02CV09503C0 |  |  |  |  | 10.53d | 0d | TESTING & COMMISSIONING [213 h]; Cost |  |  | D02TS01802C0 | DT | C | 02 | TS | SC | 018 | 02 | BILL 5 | B05 | S2 | 02 | R00 | ACF07 | 018 |  |  |  |  |  |  |  |  |  |  |  |  |  |  |  |  |
| D02TS01814C0 |  | DT-02 ; Consultant's final de-snag inspection | 7d | 2012-12-13 | 2012-12-22 | D02TS01809C0 |  |  |  |  | 10.53d | 0.25d | Labor General [1 h]; Cost |  |  | D02TS01803C0 | DT | C | 02 | TS | SC | 018 | 03 | BILL 5 | B05 | S2 | 03 | R00 | ACF07 | 018 |  |  |  |  |  |  |  |  |  |  |  |  |  |  |  |  |
|  | 05 | **Cath Lab, Ep Lab, Prep-Recv** |  | 2011-03-26 | 2012-12-22 |  |  |  |  |  |  |  |  |  |  |  |  |  |  |  |  |  |  |  |  |  |  |  |  |  |  |  |  |  |  |  |  |  |  |  |  |  |  |  |  |  |
| D02LA23001C0 |  | DT-02 ; 1st Fix, Inst. of Supports for MEP (Cath Lab) | 27d | 2011-03-26 A | 2011-06-05 A | D02S107807C0 SS, D02S307807C0 SS | 100% |  | 2011-03-14 | 2011-04-14 |  |  | MECHANICAL [1338 h]; Cost [75432.9 AED] | 75,432.94 | 75,432.94 | D02LA23001C0 | DT | C | 02 | LA | ME | 230 | 01 | BILL 5 | B05 | S2 | 1F | R00 | ACF04 | 230 | 85 | 13125.33 | 1S | MEP | M1F |  |  |  |  |  |  |  |  |  |  |  |
| D02LA21111C0 |  | DT-02 ; 1st Fix, Inst of Sprinkler main pipe (Cath Lab) | 44d | 2011-03-29 A | 2011-07-31 A | D02LA22019C0 SS+12d, D02LA23001C0, D02S107807C0, D02S307807C0 | 100% |  | 2011-05-22 | 2011-07-13 |  |  | MECHANICAL [981.6 h]; Cost [53543.7 AED] | 53,543.69 | 53,543.69 | D02LA21111C0 | DT | C | 02 | LA | ME | 211 | 11 | BILL 5 | B05 | S2 | 1F | R00 | ACF04 | 211 | 60 | 21749.35 | 1S | MEP | M1F | 100 |  |  |  |  |  |  |  |  |  |  |
| D02LA22019C0 |  | DT-02 ; 1st Fix, Inst of Drainage pipe (ceiling) (Cath Lab) | 250d | 2011-03-29 A | 2011-10-15 | D02LA23001C0, D02LA27010C0 SS+10d, D02S107807C0, D02S307807C0 | 95% | 12.5d | 2011-05-08 | 2012-03-06 | 46.1d | 0d | PLUMBING [1173.6 h]; Cost [61888.2 AED] | 61,888.15 | 58,793.75 | D02LA22019C0 | DT | C | 02 | LA | ME | 220 | 19 | BILL 5 | B05 | S2 | 1F | R00 | ACF04 | 220 | 60 | 22050.6 | 1S | MEP | M1F | 90 | 95 | 90 |  |  |  |  |  |  |  |  |
| D02LA21117C0 |  | DT-02 ; 1st Fix, Inst of Sprinkler branch pipe (Cath Lab) | 63d | 2011-04-04 A | 2011-08-30 A | D02LA09201C0, D02LA21111C0, D02LA05503C0 FF+18d | 100% |  | 2011-07-30 | 2011-10-12 |  |  | MECHANICAL [1441.2 h]; Cost [78749.8 AED] | 78,749.79 | 78,749.79 | D02LA21117C0 | DT | C | 02 | LA | ME | 211 | 17 | BILL 5 | B05 | S2 | 1F | R00 | ACF04 | 211 | 65 | 27387.3 | 1S | MEP | M1F | 95 | 100 | 95 |  |  |  |  |  |  |  |  |
| D02LA09201C0 |  | DT-02 ; Metal Studs (Cath Lab) | 90d | 2011-04-12 A | 2011-11-24 | D02CV09201C0 SS+6d, D02LA23001C0, D02PA09201C0 | 78% | 19.8d | 2011-06-23 | 2011-10-09 | 10.4d | 0d | PARTITIONS [5341 h]; PARTITIONS - Metal Studs [916 m]; Cost |  |  | D02LA09201C0 | DT | C | 02 | LA | PT | 092 | 01 | BILL 5 | B05 | S2 | 1F | R00 | ACF06 | 092 | 25 | 119973 |  | GP | PMS |  | 75 | 67 | 0 | 0 | 0 | 0 | 313 | 944 |  |  |
| D02LA22011C0 |  | DT-02 ; 2nd Fix, Drainage/Water pipe (wall) (Cath Lab) | 90d | 2011-04-12 A | 2012-01-09 | D02LA09201C0, DAFMI22002R20 FS+65d | 60% | 36d | 2011-07-02 | 2011-10-16 | 23d | 12.6d | PLUMBING [1173.6 h]; Cost [61888.2 AED] | 61,888.15 | 37,132.89 | D02LA22011C0 | DT | C | 02 | LA | ME | 220 | 11 | BILL 5 | B05 | S2 | 2F | R00 | ACF07 | 220 | 15 | 18375.5 | 2n | MEP |  | 55 | 60 | 55 |  |  |  |  |  |  |  |  |
| D02LA26013C0 |  | DT-02 ; 1st Fix, Inst of Cable Tray (Cath Lab) | 100d | 2011-04-18 A | 2011-11-03 | D02LA23001C0, D02LA27010C0 SS+7d, D02S107807C0, D02S307807C0 | 70% | 30d | 2011-05-04 | 2011-09-01 | 80d | 0d | ELECTRICAL [430.8 h]; Cost [23263.3 AED] | 23,263.34 | 16,284.34 | D02LA26013C0 | DT | C | 02 | LA | ME | 260 | 13 | BILL 5 | B05 | S2 | 1F | R00 | ACF04 | 260 | 20 | 17551.36 | 1S | MEP | M1F | 85 |  |  |  |  |  |  |  |  |  |  |
| D02LA26001C0 |  | DT-02 ; 1st Fix, Inst of Trunking/Conduiting (Cath Lab) | 100d | 2011-04-19 A | 2011-11-03 | D02LA23001C0, D02S107807C0, D02S307807C0 | 70% | 30d | 2011-04-14 | 2011-08-10 | 46.1d | 0d | ELECTRICAL [824.4 h]; Cost [42423.2 AED] | 42,423.24 | 29,696.27 | D02LA26001C0 | DT | C | 02 | LA | ME | 260 | 01 | BILL 5 | B05 | S2 | 1F | R00 | ACF04 | 260 | 30 | 27492.96 | 1S | MEP | M1F | 85 |  |  |  |  |  |  |  |  |  |  |
| D02LA27010C0 |  | DT-02 ; 1st Fix, Inst of Trunking for ELV system (Cath Lab) | 100d | 2011-04-19 A | 2011-11-03 | D02LA23001C0, D02LA26001C0 SS+10d, D02S107807C0, D02S307807C0 | 70% | 30d | 2011-04-26 | 2011-08-22 | 46.1d | 0d | ELECTRICAL [1689.6 h]; Cost [88597.9 AED] | 88,597.89 | 62,018.53 | D02LA27010C0 | DT | C | 02 | LA | ME | 270 | 10 | BILL 5 | B05 | S2 | 1F | R00 | ACF04 | 270 | 15 | 77088 | 1S | MEP | M1F | 95 |  |  |  |  |  |  |  |  |  |  |
| D02LA22005C0 |  | DT-02 ; 1st Fix, Inst of Water supply pipe (ceiling) (Cath Lab) | 90d | 2011-05-05 A | 2011-11-14 | D02LA22019C0 SS+7d, D02LA23001C0, D02S107807C0, D02S307807C0 | 60% | 36d | 2011-06-05 | 2011-09-21 | 74d | 63.6d | PLUMBING [4896 h]; Cost [264473 AED] | 264,473.49 | 158,684.09 | D02LA22005C0 | DT | C | 02 | LA | ME | 220 | 05 | BILL 5 | B05 | S2 | 1F | R00 | ACF04 | 220 | 35 |  | 1S | MEP | M1F | 85 |  |  |  |  |  |  |  |  |  |  |
| D02LA09203C0 |  | DT-02 ; Partitions 1st face (Cath Lab) | 90d | 2011-05-15 A | 2012-01-10 | D02LA09201C0 SS+12d, D02LA23017C0 FF, D02LA23023C0 FF, D02LA22007C0, D02LA26001C0 FF, D02LA26013C0 FF | 59% | 36.9d | 2011-06-15 | 2011-10-02 | 28d | 17.6d | PARTITIONS [916 m]; PARTITIONS [4191 h]; Cost |  |  | D02LA09203C0 | DT | C | 02 | LA | PT | 092 | 03 | BILL 5 | B05 | S2 | 2F | R00 | ACF06 | 092 | 10 | 52788.12 |  | GP | P1F |  | 50 | 27 | 0 | 0 | 0 | 0 | 314 | 945 |  |  |
| D02LA23015C0 |  | DT-02 ; 2nd Fix, Insulation of CHW pipe & Duct (Cath Lab) | 180d | 2011-05-15 A | 2012-03-13 | D02LA23009C0, D02LA23017C0, D02LA23023C0 | 85% | 27d | 2011-09-08 | 2012-04-14 | 53.6d | 43.2d | MECHANICAL [5311.2 h]; Cost [286617 AED] | 286,617.06 | 243,624.5 | D02LA23015C0 | DT | C | 02 | LA | ME | 230 | 15 | BILL 5 | B05 | S2 | 2F | R00 | ACF07 | 230 | 35 |  | 2n | MEP |  | 85 |  |  |  |  |  |  |  |  |  |  |
| D02LA23017C0 |  | DT-02 ; 1st Fix, Inst of CHW pipe (Cath Lab) | 200d | 2011-05-15 A | 2012-01-02 | D02LA21111C0 SS+10d, D02LA23001C0, D02S107807C0, D02S307807C0, D02LA05503C0 FF+18d | 90% | 20d | 2011-06-05 | 2012-02-05 | 28d | 0d | MECHANICAL [6325.2 h]; Cost [345418 AED] | 345,418.28 | 310,876.46 | D02LA23017C0 | DT | C | 02 | LA | ME | 230 | 17 | BILL 5 | B05 | S2 | 1F | R00 | ACF04 | 230 | 30 | 160260.86 | 1S | MEP | M1F | 90 |  |  |  |  |  |  |  |  |  |  |
| D02LA23023C0 |  | DT-02 ; 1st Fix, Inst of Main Ducting (Cath Lab) | 180d | 2011-05-15 A | 2012-01-10 | D02LA23001C0, D02LA23017C0 SS+7d, D02S107807C0, D02S307807C0 | 85% | 27d | 2011-06-13 | 2012-01-19 | 28d | 0d | MECHANICAL [11402.4 h]; Cost [622619 AED] | 622,619.08 | 529,226.22 | D02LA23023C0 | DT | C | 02 | LA | ME | 230 | 23 | BILL 5 | B05 | S2 | 1F | R00 | ACF04 | 230 | 25 | 433312.5 | 1S | MEP | M1F | 85 |  |  |  |  |  |  |  |  |  |  |
| D02LA22007C0 |  | DT-02 ; 1st Fix, Inst of Medical Gas pipe (Cath Lab) | 180d | 2011-06-05 A | 2011-10-31 | D02LA21111C0 SS+14d, D02LA23001C0, D02S107807C0, D02S307807C0 | 85% | 27d | 2011-06-05 | 2012-01-11 | 46.1d | 18.1d | PLUMBING [1616.4 h]; Cost [83529.6 AED] | 83,529.57 | 71,000.13 | D02LA22007C0 | DT | C | 02 | LA | ME | 220 | 07 | BILL 5 | B05 | S2 | 1F | R00 | ACF04 | 220 |  | 82285.29 | 1S | MEP | M1F | 85 |  |  |  |  |  |  |  |  |  |  |
| D02LA22015C0 |  | DT-02 ; 2nd Fix, Medical Gas pipe (Cath Lab) | 66d | 2011-06-07 A | 2012-01-14 | D02LA09201C0, D02LA22007C0 SS | 40% | 39.6d | 2011-08-07 | 2011-10-25 | 19.4d | 9d | PLUMBING [1616.4 h]; Cost [83529.6 AED] | 83,529.57 | 33,411.83 | D02LA22015C0 | DT | C | 02 | LA | ME | 220 | 15 | BILL 5 | B05 | S2 | 2F | R00 | ACF07 | 220 |  | 38722.49 | 2n | MEP |  | 45 |  |  |  |  |  |  |  |  |  |  |
| D02LA26007C0 |  | DT-02 ; 2nd Fix, Cable Pulling (Cath Lab) | 54d | 2011-06-13 A | 2011-12-25 | D02LA09201C0 SS+6d | 20% | 43.2d | 2011-06-13 | 2011-08-16 | 35.6d | 25.2d | ELECTRICAL [6634.8 h]; Cost [332625 AED] | 332,625.29 | 66,525.06 | D02LA26007C0 | DT | C | 02 | LA | ME | 260 | 07 | BILL 5 | B05 | S2 | 2F | R00 | ACF07 | 260 |  | 178003.62 | 2n | MEP |  | 50 |  |  |  |  |  |  |  |  |  |  |
| D02LA26009C0 |  | DT-02 ; 2nd Fix, Inst of Wall conduites (Cath Lab) | 54d | 2011-06-13 A | 2012-01-24 | D02LA09201C0 | 10% | 48.6d | 2011-06-13 | 2011-08-16 | 10.4d | 0d | ELECTRICAL [824.4 h]; Cost [42423.2 AED] | 42,423.24 | 4,242.32 | D02LA26009C0 | DT | C | 02 | LA | ME | 260 | 09 | BILL 5 | B05 | S2 | 2F | R00 | ACF07 | 260 |  | 4998.66 | 2n | MEP |  | 25 |  |  |  |  |  |  |  |  |  |  |
| D02LA27001C0 |  | DT-02 ; 1st Fix, Wiring/ Cabling work (Cath Lab) | 78d | 2011-06-15 A | 2012-01-23 | D02LA26001C0, D02LA26013C0, D02LA27010C0 | 20% | 62.4d | 2011-08-02 | 2011-11-03 | 95.6d | 85.2d | ELECTRICAL [436.8 h]; Cost [21894.9 AED] | 21,894.91 | 4,378.98 | D02LA27001C0 | DT | C | 02 | LA | ME | 270 | 01 | BILL 5 | B05 | S2 | 1F | R00 | ACF04 | 270 |  | 8769.51 | 1S | MEP | M1F | 35 |  |  |  |  |  |  |  |  |  |  |
| D02LA05503C0 |  | DT-02 ; Ceiling Support for medical equipment (Cath Lab) | 24d | 2011-09-05 A | 2011-12-11 | D02LA09201C0, DAFMI22002R20 FS+65d | 50% | 12d | 2011-11-30 | 2011-12-28 | 28d | 0d | SECONDARY STEEL [96 h]; STRUCTURAL STEEL [22 T(Fe)]; Cost |  |  | D02LA05503C0 | DT | C | 02 | LA | SW | 055 | 03 | BILL 5 | B05 | S2 | 03 | R00 | ACF03 | b |  |  |  |  |  |  |  |  |  |  |  |  | 335 | 962 |  |  |
| D02LA23008C0 |  | DT-02 ; 1st Fix, Inst of VCD's/FD's (Cath Lab) | 66d | 2011-09-05 A | 2012-03-25 | D02LA23023C0, D02LA05503C0 FF+18d | 5% | 62.7d | 2011-10-03 | 2011-12-24 | 43.3d | 32.9d | MECHANICAL [4312.8 h]; Cost [232964 AED] | 232,964.23 | 11,648.21 | D02LA23008C0 | DT | C | 02 | LA | ME | 230 | 08 | BILL 5 | B05 | S2 | 1F | R00 | ACF04 | 230 |  |  | 1S | MEP | M1F | 85 |  |  |  |  |  |  |  |  |  |  |
| D02LA23009C0 |  | DT-02 ; 2nd Fix, Inst of VAV'S CHW connection (Cath Lab) | 36d | 2011-09-05 A | 2012-02-11 | D02LA23017C0 | 10% | 32.4d | 2011-09-25 | 2011-11-05 | 53.6d | 0d | MECHANICAL [1684.8 h]; Cost [91006.1 AED] | 91,006.06 | 9,100.61 | D02LA23009C0 | DT | C | 02 | LA | ME | 230 | 09 | BILL 5 | B05 | S2 | 2F | R00 | ACF07 | 230 |  |  | 2n | MEP |  | 25 |  |  |  |  |  |  |  |  |  |  |
| D02LA08103C0 |  | DT-02 ; Door Frames (Cath Lab) | 42d | 2011-11-30 | 2012-01-19 | D02LA09201C0 SS+14d, GNHE08101C0 FS+93d, D02OF08103C0 SS+3d |  |  |  |  | 48d | 0d | ASSORTED DOORS [509 h]; Cost |  |  | D02LA08103C0 | DT | C | 02 | LA | DO | 081 | 03 | BILL 5 | B05 | S2 | DF | R00 | ACF06 | 081 |  |  |  |  |  |  |  |  |  |  |  |  | 316 | 947 | 08 |  |
| D02LA05511C0 |  | DT-02 ; Wall reinforcement for MEP/Medical (Cath Lab) | 23.88d | 2011-12-07 | 2012-01-04 | D02LA09201C0, DAFMI22002R02 FS+65d |  |  |  |  | 33.12d | 22.73d | SECONDARY STEEL [37 h]; Cost |  |  | D02LA05511C0 | DT | C | 02 | LA | SW | 055 | 11 | BILL 5 | B05 | S2 | 03 | R00 | ACF03 | b |  |  |  |  |  |  |  |  |  |  |  |  |  |  |  |  |
| D02LA01005C0 |  | DT-02 ; 2nd, Wall Inspection by Consultant (Cath Lab) | 6d | 2012-01-24 | 2012-01-31 | D02LA22011C0, D02LA22015C0, D02LA26007C0, D02LA26009C0 |  |  |  |  | 10.4d | 0d | Labor General [1.2 h]; Cost |  |  | D02LA01005C0 | DT | C | 02 | LA | ME | 010 | 05 | BILL 5 | B05 | S2 | WI | R00 | ACF07 | 010 |  |  | 2n | MEP |  | 25 |  |  |  |  |  |  |  |  |  |  |
| D02LA09205C0 |  | DT-02 ; Partitions Closing (Cath Lab) | 48d | 2012-01-31 | 2012-03-28 | D02LA01005C0, D02LA05511C0, D02LA09203C0, D02LA22005C0, D02LA22019C0, DAFOA09206C1 FF, D02OF08103C0 FF, D02LA08103C0 FF, DAFMI22002R20 FS+65d |  |  |  |  | 10.4d | 0d | PARTITIONS [916 m]; PARTITIONS [5371 h]; Cost |  |  | D02LA09205C0 | DT | C | 02 | LA | PT | 092 | 05 | BILL 5 | B05 | S2 | FF | R00 | ACF06 | 092 |  |  |  | GP | P2F |  |  |  |  |  |  |  | 315 | 946 |  |  |
| D02LA07103C0 |  | DT-02 ; Waterproofing (Cath Lab) | 12d | 2012-03-28 | 2012-04-11 | D02LA08103C0, D02LA09205C0 |  |  |  |  | 64.4d | 54d | THERMAL & MOISTURE [368 h]; THERMAL & MOISTURE [2408 m2]; Cost |  |  | D02LA07103C0 | DT | C | 02 | LA | FF | 071 | 03 | BILL 5 | B05 | S2 | 01 | R00 | ACF03 | 071 |  |  |  |  |  |  |  |  |  |  |  |  | 105 | 999 |  |  |
| D02LA09901C0 |  | DT-02 ; Wall Prime & 1st coat (Cath Lab) | 30d | 2012-03-28 | 2012-05-02 | D02LA09205C0 |  |  |  |  | 10.4d | 0d | WALL PAINT [1111 h]; WALL PAINT [1386 m2]; Cost |  |  | D02LA09901C0 | DT | C | 02 | LA | PA | 099 | 01 | BILL 5 | B05 | S2 | 01 | R00 | ACF06 | 099 |  |  |  |  |  |  |  |  |  |  |  |  | 328 | 956 |  |  |
| D02LA26005C0 |  | DT-02 ; 2nd Fix, Wiring for Power/Lighting/Emergency (Cath Lab) | 36d | 2012-03-28 | 2012-05-09 | D02LA09205C0 |  |  |  |  | 76.4d | 0d | ELECTRICAL [436.8 h]; Cost |  |  | D02LA26005C0 | DT | C | 02 | LA | ME | 260 | 05 | BILL 5 | B05 | S2 | 2F | R00 | ACF07 | 260 |  |  | 2n | MEP |  |  |  |  |  |  |  |  |  |  |  |  |
| D02LA26011C0 |  | DT-02 ; 2nd Fix, Inst of Equipment (DB) (Cath Lab) | 48d | 2012-03-28 | 2012-05-23 | D02LA09205C0 |  |  |  |  | 88.4d | 54d | ELECTRICAL [4054.8 h]; Cost |  |  | D02LA26011C0 | DT | C | 02 | LA | ME | 260 | 11 | BILL 5 | B05 | S2 | 2F | R00 | ACF04 | 260 |  |  | 2n | MEP |  |  |  |  |  |  |  |  |  |  |  | E |
| D02LA26053C0 |  | DT-02 ; 2nd Fix, Wiring / Cabling (Cath Lab) | 36d | 2012-03-28 | 2012-05-09 | D02LA26009C0, D02LA09203C0, D02LA09205C0 |  |  |  |  | 130.4d | 120d | ELECTRICAL [436.8 h]; Cost |  |  | D02LA26053C0 | DT | C | 02 | LA | ME | 260 | 53 | BILL 5 | B05 | S2 | 2F | R00 | ACF07 | 260 |  |  | 2n | MEP |  |  |  |  |  |  |  |  | 389 | 977 |  |  |
| D02LA27020C0 |  | DT-02 ; 2nd Fix, Inst of ELV Equipment (Panels) (Cath Lab) | 42d | 2012-03-28 | 2012-05-16 | D02LA09205C0 |  |  |  |  | 94.4d | 60d | ELECTRICAL [1723.2 h]; Cost |  |  | D02LA27020C0 | DT | C | 02 | LA | ME | 270 | 20 | BILL 5 | B05 | S2 | 2F | R00 | ACF04 | 270 |  |  | 2n | MEP |  |  |  |  |  |  |  |  |  |  |  | E |
| D02LA05501C0 |  | DT-02 ; Handrails & balustrade (Cath Lab) | 36d | 2012-05-02 | 2012-06-13 | D02LA09901C0, D02CO10200R02 FF |  |  |  |  | 46.4d | 36d | SECONDARY STEEL [179 h]; Cost |  |  | D02LA05501C0 | DT | C | 02 | LA | SW | 055 | 01 | BILL 5 | B05 | S2 | 01 | R00 | ACF03 | a |  |  |  |  |  |  |  |  |  |  |  |  |  |  |  |  |
| D02LA09501C0 |  | DT-02 ; Ceiling Grid and Service Tile (Cath Lab) | 36d | 2012-05-02 | 2012-06-13 | D02LA05503C0, D02LA09205C0 SS+15d, D02LA21117C0, D02LA23008C0, D02LA23009C0, D02LA23015C0, D02LA27001C0, D02LA09901C0 |  |  |  |  | 10.4d | 0d | CEILING GRID FOR GYPSUM [3326.21 h]; CEILING GRID FOR GYPSUM [284.66 m2]; Cost |  |  | D02LA09501C0 | DT | C | 02 | LA | CE | 095 | 01 | BILL 5 | B05 | S2 | 01 | R00 | ACF06 | 095 |  |  |  |  |  |  |  |  |  |  |  |  | 323 | 952 |  |  |
| D02LA26015C0 |  | DT-02 ; Final Fix, Termination & Gladding of Cables (Cath Lab) | 48d | 2012-05-09 | 2012-07-05 | D02LA26005C0 |  |  |  |  | 76.4d | 66d | ELECTRICAL [368.4 h]; Cost |  |  | D02LA26015C0 | DT | C | 02 | LA | ME | 260 | 15 | BILL 5 | B05 | S2 | FF | R00 | ACF07 | 260 |  |  | FF | MEP |  |  |  |  |  |  |  |  |  |  |  |  |
| D02LA09305C0 |  | DT-02 ; Flooring (Terrazzo) (Cath Lab) | 36d | 2012-06-13 | 2012-07-26 | D02LA07103C0, D02LA09501C0 |  |  |  |  | 10.4d | 0d | TERRAZO FLOOR [285 m2]; TERRAZO FLOOR [520 h]; Cost |  |  | D02LA09305C0 | DT | C | 02 | LA | FF | 096 | 05 | BILL 5 | B05 | S2 | 07 | R00 | ACF06 | TZ |  |  |  |  |  |  |  |  |  |  |  |  | 106 | 1000 |  |  |
| D02LA09601C0 |  | DT-02 ; Flooring (Rubber & etc) (Cath Lab) | 36d | 2012-06-13 | 2012-07-26 | D02LA09901C0, D02LA09501C0, D02LA05501C0 FF |  |  |  |  | 10.4d | 0d | RUBBER FLOOR [232 h]; RUBBER FLOOR [565 m2]; Cost |  |  | D02LA09601C0 | DT | C | 02 | LA | FF | 096 | 01 | BILL 5 | B05 | S2 | 03 | R00 | ACF06 | RF |  |  |  |  |  |  |  |  |  |  |  |  | 326 | 955 |  |  |
| D02LA09905C0 |  | DT-02 ; Ceiling Prime & 1st coat (Cath Lab) | 36d | 2012-06-13 | 2012-07-26 | D02LA09501C0 |  |  |  |  | 70.4d | 0d | ASSORTED CEILING FINISH [121 h]; Cost |  |  | D02LA09905C0 | DT | C | 02 | LA | PA | 099 | 05 | BILL 5 | B05 | S2 | 01 | R00 | ACF06 | 099 |  |  |  |  |  |  |  |  |  |  |  |  | 330 | 958 |  |  |
| D02LA21115C0 |  | DT-02 ; 2nd Fix, Inst of Sprinkler droppers (Cath Lab) | 36d | 2012-06-13 | 2012-07-26 | D02LA09501C0 |  |  |  |  | 40.4d | 0d | MECHANICAL [2067.6 h]; Cost |  |  | D02LA21115C0 | DT | C | 02 | LA | ME | 211 | 15 | BILL 5 | B05 | S2 | 2F | R00 | ACF07 | 211 |  |  | 2n | MEP |  |  |  |  |  |  |  |  |  |  |  |  |
| D02LA23021C0 |  | DT-02 ; 2nd Fix, Inst of Flexible Duct & Plenum boxes (Cath Lab) | 36d | 2012-06-13 | 2012-07-26 | D02LA09205C0, D02LA09501C0 |  |  |  |  | 28.4d | 0d | MECHANICAL [274.8 h]; Cost |  |  | D02LA23021C0 | DT | C | 02 | LA | ME | 230 | 21 | BILL 5 | B05 | S2 | 2F | R00 | ACF07 | 230 |  |  | 2n | MEP |  |  |  |  |  |  |  |  |  |  |  |  |
| D02LA26017C0 |  | DT-02 ; Final Fix, Inst of Ceiling rose (Cath Lab) | 48d | 2012-06-13 | 2012-08-09 | D02LA09501C0 |  |  |  |  | 39.4d | 0d | ELECTRICAL [67.2 h]; Cost |  |  | D02LA26017C0 | DT | C | 02 | LA | ME | 260 | 17 | BILL 5 | B05 | S2 | FF | R00 | ACF07 | 260 |  |  | FF | MEP |  |  |  |  |  |  |  |  |  |  |  |  |
| D02LA27002C0 |  | DT-02 ; 2nd Fix, Wiring Droppers (Cath Lab) | 36d | 2012-06-13 | 2012-07-26 | D02LA09501C0 |  |  |  |  | 34.4d | 0d | ELECTRICAL [436.8 h]; Cost |  |  | D02LA27002C0 | DT | C | 02 | LA | ME | 270 | 02 | BILL 5 | B05 | S2 | 2F | R00 | ACF07 | 270 |  |  | 2n | MEP |  |  |  |  |  |  |  |  |  |  |  |  |
| D02LA21113C0 |  | DT-02 ; Final Fix, Inst of Sprinklers head/ Extinguisher (Cath Lab) | 48d | 2012-06-21 | 2012-08-16 | D02LA09501C0, D02LA21115C0 SS+6d |  |  |  |  | 40.4d | 30d | MECHANICAL [403.2 h]; Cost |  |  | D02LA21113C0 | DT | C | 02 | LA | ME | 211 | 13 | BILL 5 | B05 | S2 | FF | R00 | ACF07 | 211 |  |  | FF | MEP |  |  |  |  |  |  |  |  |  |  |  |  |
| D02LA23019C0 |  | DT-02 ; Final Fix, Inst of Grilles & Diffusers (Cath Lab) | 60d | 2012-06-21 | 2012-09-02 | D02LA09501C0, D02LA23021C0 SS+6d |  |  |  |  | 28.4d | 18d | MECHANICAL [2560.8 h]; Cost |  |  | D02LA23019C0 | DT | C | 02 | LA | ME | 230 | 19 | BILL 5 | B05 | S2 | FF | R00 | ACF07 | 230 |  |  | FF | MEP |  |  |  |  |  |  |  |  |  |  |  |  |
| D02LA27030C0 |  | DT-02 ; Final Fix, Inst of ELV device (Detector/Speaker) (Cath Lab) | 54d | 2012-06-21 | 2012-08-26 | D02LA09501C0, D02LA27002C0 SS+6d |  |  |  |  | 34.4d | 24d | ELECTRICAL [2152.8 h]; Cost |  |  | D02LA27030C0 | DT | C | 02 | LA | ME | 270 | 30 | BILL 5 | B05 | S2 | FF | R00 | ACF07 | 270 |  |  | FF | MEP |  |  |  |  |  |  |  |  |  |  |  |  |
| D02LA26003C0 |  | DT-02 ; Final Fix, Inst of Light fittings (Cath Lab) | 48d | 2012-06-23 | 2012-08-18 | D02LA09501C0, D02LA26017C0 SS+7d |  |  |  |  | 39.4d | 29d | ELECTRICAL [6626.4 h]; Cost |  |  | D02LA26003C0 | DT | C | 02 | LA | ME | 260 | 03 | BILL 5 | B05 | S2 | FF | R00 | ACF07 | 260 |  |  | FF | MEP |  |  |  |  |  |  |  |  |  |  |  |  |
| D02LA06101C0 |  | DT-02 ; Wood / caseworks (Cath Lab) | 48d | 2012-07-26 | 2012-09-23 | D02CO04415C0, D02LA09501C0, D02LA09901C0, D02CO04437C0, DAFWA00111M0, CAFWA00113M0, DAFMI22003R02 FS+184d, D02LA09305C0, D02LA09601C0 |  |  |  |  | 10.4d | 0d | WOOD WORK/CASEWORK [368.04 no]; WOOD WORK/CASEWORK [3086 h]; Cost |  |  | D02LA06101C0 | DT | C | 02 | LA | WO | 061 | 01 | BILL 5 | B05 | S2 | WW | R00 | ACF06 | 061 |  |  |  |  |  |  |  |  |  |  |  |  | 332 | 960 |  |  |
| D02LA06102C0 |  | DT-02 ; Head Wall (Cath Lab) | 33.5d | 2012-07-26 | 2012-09-06 | D02CO04415C0, D02LA09501C0, D02LA06101C0 SS, DAFWA00111M0, DAFMI22003R02 FS+184d |  |  |  |  | 72.9d | 62.5d | WOOD WORK/CASEWORK [2881 h]; Cost |  |  | D02LA06102C0 | DT | C | 02 | LA | WO | 061 | 02 | BILL 5 | B05 | S2 | WW | R00 | ACF06 | 061 |  |  |  |  |  |  |  |  |  |  |  |  | 332 | 960 |  |  |
| D02LA08107C0 |  | DT-02 ; Doors (Cath Lab) | 42d | 2012-07-26 | 2012-09-16 | D02LA08103C0, D02LA09901C0, D02LA09601C0, D02LA09305C0 |  |  |  |  | 40.4d | 0d | ASSORTED DOORS [820 h]; ASSORTED DOORS [82 no]; Cost |  |  | D02LA08107C0 | DT | C | 02 | LA | DO | 081 | 07 | BILL 5 | B05 | S2 | DR | R00 | ACF06 | 081 |  |  |  |  |  |  |  |  |  |  |  |  | 317 | 948 | 08 |  |
| D02LA09701C0 |  | DT-02 ; Wall finishes (ST, WD, WC) (Cath Lab) | 30d | 2012-07-26 | 2012-09-02 | D02LA26011C0, D02LA27020C0, D02LA09305C0, D02LA09601C0 |  |  |  |  | 34.4d | 0d | ASSORTED WALL FINISH [1195 h]; ASSORTED WALL FINISH [1373 m2]; Cost |  |  | D02LA09701C0 | DT | C | 02 | LA | WF | 097 | 01 | BILL 5 | B05 | S2 | 01 | R00 | ACF06 | 097 |  |  |  |  |  |  |  |  |  |  |  |  | 105 | 1002 |  |  |
| D02LA09903C0 |  | DT-02 ; Wall Final Paint (Cath Lab) | 36d | 2012-07-26 | 2012-09-09 | D02LA09901C0, D02LA09905C0 |  |  |  |  | 70.4d | 30d | WALL PAINT [598 h]; WALL PAINT [746 m2]; Cost |  |  | D02LA09903C0 | DT | C | 02 | LA | PA | 099 | 03 | BILL 5 | B05 | S2 | 02 | R00 | ACF06 | 099 |  |  |  |  |  |  |  |  |  |  |  |  | 329 | 957 |  |  |
| D02LA22025C0 |  | DT-02 ; Final Fix, Inst of Sanitary Ware (Cath Lab) | 48d | 2012-07-26 | 2012-09-23 | D02LA09205C0, D02LA09305C0, A10230 FS+148d |  |  |  |  | 39.4d | 0d | PLUMBING [1917.6 h]; Cost |  |  | D02LA22025C0 | DT | C | 02 | LA | ME | 220 | 25 | BILL 5 | B05 | S2 | FF | R00 | ACF07 | 220 |  |  | FF | MEP |  |  |  |  |  |  |  |  |  |  |  |  |
| D02LA11005C0 |  | DT-02 ; Utility belt (Cath Lab) | 24d | 2012-08-02 | 2012-09-02 | D02LA06101C0 SS+6d, D02LA09205C0 |  |  |  |  | 10.4d | 0d | FF&E [82 h]; FF&E [43.39 no]; Cost |  |  | D02LA11005C0 | DT | C | 02 | LA | WO | 110 | 05 | BILL 5 | B05 | S2 | 05 | R00 | ACF08 | e |  |  |  |  |  |  |  |  |  |  |  |  |  |  |  |  |
| D02LA22021C0 |  | DT-02 ; Final Fix, Terminate Sanitary Ware & Appliances (Cath Lab) | 48d | 2012-08-04 | 2012-10-01 | D02LA22011C0, D02LA22025C0 SS+7d |  |  |  |  | 39.4d | 29d | PLUMBING [1917.6 h]; Cost |  |  | D02LA22021C0 | DT | C | 02 | LA | ME | 220 | 21 | BILL 5 | B05 | S2 | FF | R00 | ACF07 | 220 |  |  | FF | MEP |  |  |  |  |  |  |  |  |  |  |  |  |
| D02LA11001C0 |  | DT-02 ; Wall Protection (WP, CG, WG, FCG) (Cath Lab) | 24d | 2012-09-02 | 2012-09-30 | D02LA09701C0, D02LA09903C0 SS |  |  |  |  | 52.4d | 42d | FF&E [1658 h]; Cost |  |  | D02LA11001C0 | DT | C | 02 | LA | WF | 110 | 01 | BILL 5 | B05 | S2 | 03 | R00 | ACF08 | b |  |  |  |  |  |  |  |  |  |  |  |  | 326 | 1001 |  |  |
| D02LA22029C0 |  | DT-02 ; Final Fix, Medical Gas pipe (Cath Lab) | 18d | 2012-09-02 | 2012-09-23 | D02LA09501C0, D02LA11005C0 |  |  |  |  | 10.4d | 0d | PLUMBING [1616.4 h]; Cost |  |  | D02LA22029C0 | DT | C | 02 | LA | ME | 220 | 29 | BILL 5 | B05 | S2 | FF | R00 | ACF07 | 220 |  |  | FF | MEP |  |  |  |  |  |  |  |  |  |  |  |  |
| D02LA08709C0 |  | DT-02 ; Ironmongery (Cath Lab) | 24d | 2012-09-16 | 2012-10-14 | D02LA08107C0 |  |  |  |  | 40.4d | 30d | IRONMONGERY [390 h]; IRONMONGERY [39 no]; Cost |  |  | D02LA08709C0 | DT | C | 02 | LA | DO | 087 | 09 | BILL 5 | B05 | S2 | IM | R00 | ACF06 | 087 |  |  |  |  |  |  |  |  |  |  |  |  | 322 | 951 | 08 |  |
| D02LA01006C0 |  | DT-02 ; 2nd, Ceiling Inspection by Consultants (Cath Lab) | 6d | 2012-09-23 | 2012-09-30 | D02LA21115C0, D02LA23009C0, D02LA23015C0, D02LA27002C0, D02LA09501C0, D02LA21113C0, D02LA22029C0, D02LA23019C0, D02LA26003C0, D02LA26017C0, D02LA27030C0, D02LA26015C0 |  |  |  |  | 10.4d | 0d | Labor General [1.2 h]; Cost |  |  | D02LA01006C0 | DT | C | 02 | LA | ME | 010 | 06 | BILL 5 | B05 | S2 | CI | R00 | ACF07 | 010 |  |  | 2n | MEP |  |  |  |  |  |  |  |  |  |  |  |  |
| D02LA09503C0 |  | DT-02 ; Ceiling closure - ACT/Gypsum (Cath Lab) | 18d | 2012-09-30 | 2012-10-21 | D02LA01006C0, D02LA21115C0, D02LA26005C0, D02LA27001C0, D02LA27002C0, DAFOA09505C1 FF, D02LA06101C0, D02LA09701C0, D02LA23021C0, D02LA26053C0 |  |  |  |  | 10.4d | 0d | ASSORTED CEILING FINISH [674.04 h]; CEILING GYPSUM [93.28 h]; ASSORTED CEILING FINISH [1096 m2]; CEILING GYPSUM [285 m2]; Cost |  |  | D02LA09503C0 | DT | C | 02 | LA | CE | 095 | 03 | BILL 5 | B05 | S2 | 02 | R00 | ACF06 | 095 |  |  |  |  |  |  |  |  |  |  |  |  | 324 | 953 |  |  |
| D02LA09907C0 |  | DT-02 ; Ceiling Final paint (Cath Lab) | 12d | 2012-10-21 | 2012-11-06 | D02LA09601C0, D02LA09905C0, D02LA09503C0 |  |  |  |  | 22.4d | 12d | ASSORTED CEILING FINISH [65 h]; Cost |  |  | D02LA09907C0 | DT | C | 02 | LA | PA | 099 | 07 | BILL 5 | B05 | S2 | 02 | R00 | ACF06 | 099 |  |  |  |  |  |  |  |  |  |  |  |  | 331 | 959 |  |  |
| D02LA11003C0 |  | DT-02 ; FF & E (Cath Lab) | 12d | 2012-10-21 | 2012-11-06 | D02LA09601C0, D02LA09503C0 |  |  |  |  | 22.4d | 12d | FF&E [45 h]; FF&E [24.05 no]; Cost |  |  | D02LA11003C0 | DT | C | 02 | LA | WO | 110 | 03 | BILL 5 | B05 | S2 | 04 | R00 | ACF08 | a |  |  |  |  |  |  |  |  |  |  |  |  | 333 | 961 |  |  |
| D02LA22027C0 |  | DT-02 ; Final Fix, Inst of All drain (Cath Lab) | 12d | 2012-10-21 | 2012-11-06 | D02LA09305C0, D02LA09503C0 |  |  |  |  | 10.4d | 0d | PLUMBING [1173.6 h]; Cost |  |  | D02LA22027C0 | DT | C | 02 | LA | ME | 220 | 27 | BILL 5 | B05 | S2 | FF | R00 | ACF07 | 220 |  |  | FF | MEP |  |  |  |  |  |  |  |  |  |  |  |  |
| D02LA26019C0 |  | DT-02 ; Final Fix, Inst of Switch/Sockets (Cath Lab) | 12d | 2012-10-21 | 2012-11-06 | D02LA09901C0, D02LA09503C0 |  |  |  |  | 10.4d | 0d | ELECTRICAL [610.8 h]; Cost |  |  | D02LA26019C0 | DT | C | 02 | LA | ME | 260 | 19 | BILL 5 | B05 | S2 | FF | R00 | ACF07 | 260 |  |  | FF | MEP |  |  |  |  |  |  |  |  |  |  |  |  |

| ID | WBS | Activity | Duration | Start | Finish | Predecessors | Complete | Remaining | Planned start | Planned finish | Total float | Free float | Resources | Cost | Actual cost | change id | CCAD BUILDING(SET) | CCAD PHASE(SET) | CCAD FLOOR(SET) | CCAD ZONE(SET) | CCAD WORK(SET) | CCAD SECTION(SET) | CCAD SERIAL No.(SET) | CCAD CBS(SET) | CCAD BILL(SET) | CCAD HANDOVER(SET) | CCAD TAG(SET) | CCAD REV(SET) | CCADACF (SET) | CCAD SSCF | RENZ % COMPLETE | Claimed This Month | CCAD SUB ZONE MEP(SET) | CCAD CSA | Act Selector % | PERCENT COMPLETE | July2011 Target% Complete | user_number8 | user_integer1 | user_integer2 | user_number7 | Change Order # | NEW ACTIVITY ID | P_811 | P_711 | R3 Partitions | CCAD DIVISION(SET) | CCAD MEQ | R3 Finish |
| --- | --- | --- | --- | --- | --- | --- | --- | --- | --- | --- | --- | --- | --- | --- | --- | --- | --- | --- | --- | --- | --- | --- | --- | --- | --- | --- | --- | --- | --- | --- | --- | --- | --- | --- | --- | --- | --- | --- | --- | --- | --- | --- | --- | --- | --- | --- | --- | --- | --- |
|  | 10 | **Precommissioning Tesing & snagging (Cath Lab, Ep Lab, Prep-Recv)** |  | 2012-11-06 | 2012-12-22 |  |  |  |  |  |  |  |  |  |  |  |  |  |  |  |  |  |  |  |  |  |  |  |  |  |  |  |  |  |  |  |  |  |  |  |  |  |  |  |  |  |  |  |  |
| D02TS01805C0 |  | DT-02 ; MEP de-snag, FIREM sign-off | 12d | 2012-11-06 | 2012-11-21 | D02LA11005C0, D02LA22025C0, D02LA22027C0, D02LA26015C0, D02LA22021C0, D02LA21113C0, D02LA23019C0, D02LA22029C0, D02LA26017C0, D02LA26003C0, D02LA27030C0, D02LA26019C0 |  |  |  |  | 10.4d | 0d | TESTING & COMMISSIONING [1275 h]; Cost |  |  | D02TS01801C0 | DT | C | 02 | TS | SC | 018 | 01 | BILL 5 | B05 | S2 | 01 | R00 | ACF07 | 018 |  |  |  |  |  |  |  |  |  |  |  |  |  |  |  |  |  |  |  |
| D02TS01810C0 |  | DT-02 ; Touch-up & Clean / JV inspection /CIR /De-snag | 18d | 2012-11-21 | 2012-12-13 | D02LA06101C0, D02LA06102C0, D02LA08709C0, D02LA09305C0, D02LA09601C0, D02LA09701C0, D02LA09903C0, D02LA09907C0, D02LA11001C0, D02LA11003C0, D02TS01805C0, D02LA05501C0, D02LA09503C0 |  |  |  |  | 10.4d | 0d | TESTING & COMMISSIONING [213 h]; Cost |  |  | D02TS01802C0 | DT | C | 02 | TS | SC | 018 | 02 | BILL 5 | B05 | S2 | 02 | R00 | ACF07 | 018 |  |  |  |  |  |  |  |  |  |  |  |  |  |  |  |  |  |  |  |
| D02TS01815C0 |  | DT-02 ; Consultant's final de-snag inspection | 7d | 2012-12-13 | 2012-12-22 | D02TS01810C0 |  |  |  |  | 10.4d | 0.12d | Labor General [1 h]; Cost |  |  | D02TS01803C0 | DT | C | 02 | TS | SC | 018 | 03 | BILL 5 | B05 | S2 | 03 | R00 | ACF07 | 018 |  |  |  |  |  |  |  |  |  |  |  |  |  |  |  |  |  |  |  |
|  | 06 | **Lobby, Wait, Corridor, Courtyard** |  | 2011-03-09 | 2012-12-06 |  |  |  |  |  |  |  |  |  |  |  |  |  |  |  |  |  |  |  |  |  |  |  |  |  |  |  |  |  |  |  |  |  |  |  |  |  |  |  |  |  |  |  |  |
| D02PA21111C0 |  | DT-02 ; 1st Fix, Inst of Sprinkler main pipe (Public Area) | 44d | 2011-03-09 A | 2011-06-07 A | D02PA22005C0 SS+10d, D02PA23001C0 | 100% |  | 2011-05-31 | 2011-07-23 |  |  | MECHANICAL [981.6 h]; Cost [53543.7 AED] | 53,543.69 | 53,543.69 | D02PA21111C0 | DT | C | 02 | PA | ME | 211 | 11 | BILL 5 | B05 | S2 | 1F | R00 | ACF04 | 211 | 40 | 37284.62 | 1S | MEP | M1F |  |  |  |  |  |  |  |  |  |  |  |  |  |  |
| D02PA21117C0 |  | DT-02 ; 1st Fix, Inst of Sprinkler branch pipe (Public Area) | 250d | 2011-03-10 A | 2011-12-04 | D02PA09201C0, D02PA21111C0 | 90% | 25d | 2011-07-24 | 2012-05-21 | 107.05d | 84d | MECHANICAL [1441.2 h]; Cost [78749.8 AED] | 78,749.79 | 70,874.81 | D02PA21117C0 | DT | C | 02 | PA | ME | 211 | 17 | BILL 5 | B05 | S2 | 1F | R00 | ACF04 | 211 | 60 | 27387.3 | 1S | MEP | M1F | 90 | 98 |  |  |  |  |  |  |  |  |  |  |  |  |
| D02PA22019C0 |  | DT-02 ; 1st Fix, Inst of Drainage pipe (ceiling) (Public Area) | 250d | 2011-03-10 A | 2011-10-05 | D02PA23001C0, D02PA27010C0 SS+14d | 98% | 5d | 2011-05-15 | 2012-03-13 | 66.35d | 0d | PLUMBING [1173.6 h]; Cost [61888.2 AED] | 61,888.15 | 60,650.39 | D02PA22019C0 | DT | C | 02 | PA | ME | 220 | 19 | BILL 5 | B05 | S2 | 1F | R00 | ACF04 | 220 | 60 | 22050.6 | 1S | MEP | M1F |  | 98 |  |  |  |  |  |  |  |  |  |  |  |  |
| D02PA23017C0 |  | DT-02 ; 1st Fix, Inst of CHW pipe (Public Area) | 180d | 2011-03-14 A | 2011-10-31 | D02PA21111C0 SS+10d, D02PA23001C0 | 85% | 27d | 2011-06-12 | 2012-01-18 | 66.35d | 0d | MECHANICAL [6325.2 h]; Cost [345418 AED] | 345,418.28 | 293,605.54 | D02PA23017C0 | DT | C | 02 | PA | ME | 230 | 17 | BILL 5 | B05 | S2 | 1F | R00 | ACF04 | 230 | 55 | 40065.2 | 1S | MEP | M1F |  | 85 |  |  |  |  |  |  |  |  |  |  |  |  |
| D02PA23023C0 |  | DT-02 ; 1st Fix, Inst of Main Ducting (Public Area) | 180d | 2011-03-16 A | 2011-10-31 | D02PA23001C0, D02PA23017C0 SS+7d | 85% | 27d | 2011-06-20 | 2012-01-26 | 67.55d | 0d | MECHANICAL [11402.4 h]; Cost [622619 AED] | 622,619.08 | 529,226.22 | D02PA23023C0 | DT | C | 02 | PA | ME | 230 | 23 | BILL 5 | B05 | S2 | 1F | R00 | ACF04 | 230 | 40 | 324984.15 | 1S | MEP | M1F |  | 85 |  |  |  |  |  |  |  |  |  |  |  |  |
| D02PA23001C0 |  | DT-02 ; 1st Fix, Inst. of Supports for MEP (Public Area) | 27d | 2011-03-28 A | 2011-06-06 A | D02S107807C0 SS, D02S207807C0 SS, D02S307807C0 SS | 100% |  | 2011-03-14 | 2011-04-14 |  |  | MECHANICAL [1338 h]; Cost [75432.9 AED] | 75,432.94 | 75,432.94 | D02PA23001C0 | DT | C | 02 | PA | ME | 230 | 01 | BILL 5 | B05 | S2 | 1F | R00 | ACF04 | 230 | 80 | 17500.44 | 1S | MEP | M1F |  |  |  |  |  |  |  |  |  |  |  |  |  |  |
| D02PA09201C0 |  | DT-02 ; Metal Studs (Public Area) | 60d | 2011-04-12 A | 2011-10-30 | D02PA23001C0 SS+12d, DAFMI09202R02 FS+58d | 78% | 13.2d | 2011-05-30 | 2011-08-08 | 10.28d | 0d | PARTITIONS [3926 h]; PARTITIONS - Metal Studs [674 m]; Cost |  |  | D02PA09201C0 | DT | C | 02 | PA | PT | 092 | 01 | BILL 5 | B05 | S2 | 1F | R00 | ACF06 | 092 | 25 | 90998.95 |  | GP | PMS |  |  | 0 | 0 | 0 | 0 | 313 | 944 | 75 | 67 | R3 |  |  |  |
| D02PA27010C0 |  | DT-02 ; 1st Fix, Inst of Trunking for ELV system (Public Area) | 100d | 2011-04-19 A | 2011-11-03 | D02PA23001C0, D02PA26001C0 SS+12d, D02S107807C0, D02S207807C0, D02S307807C0 | 70% | 30d | 2011-04-28 | 2011-08-24 | 66.35d | 0d | ELECTRICAL [1689.6 h]; Cost [88597.9 AED] | 88,597.89 | 62,018.53 | D02PA27010C0 | DT | C | 02 | PA | ME | 270 | 10 | BILL 5 | B05 | S2 | 1F | R00 | ACF04 | 270 | 10 | 77088 | 1S | MEP | M1F |  | 85 |  |  |  |  |  |  |  |  |  |  |  |  |
| D02PA26001C0 |  | DT-02 ; 1st Fix, Inst of Trunking/Conduiting (Public Area) | 100d | 2011-04-21 A | 2011-11-03 | D02PA23001C0, D02S107807C0, D02S207807C0, D02S307807C0 | 70% | 30d | 2011-04-14 | 2011-08-10 | 66.35d | 0d | ELECTRICAL [824.4 h]; Cost [42423.2 AED] | 42,423.24 | 29,696.27 | D02PA26001C0 | DT | C | 02 | PA | ME | 260 | 01 | BILL 5 | B05 | S2 | 1F | R00 | ACF04 | 260 | 15 | 34990.9 | 1S | MEP | M1F |  | 85 |  |  |  |  |  |  |  |  |  |  |  |  |
| D02PA26013C0 |  | DT-02 ; 1st Fix, Inst of Cable Tray (Public Area) | 100d | 2011-04-21 A | 2011-11-03 | D02PA23001C0, D02PA27010C0 SS+10d, D02S107807C0, D02S207807C0, D02S307807C0 | 70% | 30d | 2011-05-10 | 2011-09-07 | 72.65d | 0d | ELECTRICAL [430.8 h]; Cost [23263.3 AED] | 23,263.34 | 16,284.34 | D02PA26013C0 | DT | C | 02 | PA | ME | 260 | 13 | BILL 5 | B05 | S2 | 1F | R00 | ACF04 | 260 | 10 | 20251.5 | 1S | MEP | M1F |  | 85 |  |  |  |  |  |  |  |  |  |  |  |  |
| D02PA22005C0 |  | DT-02 ; 1st Fix, Inst of Water supply pipe (ceiling) (Public Area) | 90d | 2011-05-02 A | 2011-11-24 | D02PA22019C0 SS+4d, D02PA23001C0 | 50% | 45d | 2011-05-19 | 2011-09-05 | 66.35d | 0d | PLUMBING [4896 h]; Cost [264473 AED] | 264,473.49 | 132,236.74 | D02PA22005C0 | DT | C | 02 | PA | ME | 220 | 05 | BILL 5 | B05 | S2 | 1F | R00 | ACF04 | 220 | 30 |  | 1S | MEP | M1F |  | 85 |  |  |  |  |  |  |  |  |  |  |  |  |
| D02PA09203C0 |  | DT-02 ; Partitions early wall & 1st face (Public Area) | 60d | 2011-05-15 A | 2011-12-05 | D02PA09201C0 SS+12d, D02PA23017C0 FF, D02PA23023C0 | 59% | 24.6d | 2011-05-31 | 2011-08-09 | 73.65d | 50.6d | PARTITIONS [674 m]; PARTITIONS [3062 h]; Cost |  |  | D02PA09203C0 | DT | C | 02 | PA | PT | 092 | 03 | BILL 5 | B05 | S2 | 2F | R00 | ACF06 | 092 | 10 | 40039.56 |  | GP | P1F |  |  | 0 | 0 | 0 | 0 | 314 | 945 | 50 | 27 |  |  |  |  |
| D02PA26009C0 |  | DT-02 ; 2nd Fix, Inst of Wall conduites (Public Area) | 54d | 2011-05-31 A | 2011-12-31 | D02PA09201C0 | 10% | 48.6d | 2011-05-31 | 2011-08-02 | 45.45d | 22.4d | ELECTRICAL [824.4 h]; Cost [42423.2 AED] | 42,423.24 | 4,242.32 | D02PA26009C0 | DT | C | 02 | PA | ME | 260 | 09 | BILL 5 | B05 | S2 | 2F | R00 | ACF07 | 260 |  |  | 2n | MEP |  |  | 15 |  |  |  |  |  |  |  |  |  |  |  |  |
| D02PA40302C0 |  | DT-02 ; 2nd Fix, Pneumatic tube (Public Area) | 66d | 2011-05-31 A | 2011-12-17 | D02PA09201C0 | 45% | 36.3d | 2011-05-31 | 2011-08-16 | 57.75d | 34.7d | MECHANICAL [5653.2 h]; Cost [291897 AED] | 291,897.23 | 131,353.75 | C03E140302C0 | DT | C | 02 | PA | ME | 403 | 02 | BILL 5 | B05 | S2 | 2F | R00 | ACF07 | 403 |  |  | 2n | MEP |  |  | 50 |  |  |  |  |  |  |  |  |  |  |  |  |
| D02PA27001C0 |  | DT-02 ; 1st Fix, Wiring/ Cabling work (Public Area) | 84d | 2011-06-14 A | 2012-01-14 | D02PA26001C0, D02PA26013C0, D02PA27010C0 | 35% | 54.6d | 2011-08-11 | 2011-11-23 | 72.65d | 49.6d | ELECTRICAL [436.8 h]; Cost [21894.9 AED] | 21,894.91 | 7,663.22 | D02PA27001C0 | DT | C | 02 | PA | ME | 270 | 01 | BILL 5 | B05 | S2 | 1F | R00 | ACF04 | 270 |  | 9027.43 | 1S | MEP | M1F |  | 45 |  |  |  |  |  |  |  |  |  |  |  |  |
| D02PA23015C0 |  | DT-02 ; 2nd Fix, Insulation of CHW pipe & Duct (Public Area) | 90d | 2011-07-10 A | 2012-01-21 | D02PA23009C0, D02PA23017C0, D02PA23023C0 | 65% | 31.5d | 2011-08-20 | 2011-12-11 | 66.35d | 43.3d | MECHANICAL [5311.2 h]; Cost [286617 AED] | 286,617.06 | 186,301.09 | D02PA23015C0 | DT | C | 02 | PA | ME | 230 | 15 | BILL 5 | B05 | S2 | 2F | R00 | ACF07 | 230 |  |  | 2n | MEP |  |  | 80 | 0 | 0 | 0 | 0 |  |  | 60 | 50 |  |  |  |  |
| D02PA22011C0 |  | DT-02 ; 2nd Fix, Drainage/Water pipe (wall) (Public Area) | 54d | 2011-08-10 A | 2012-01-28 | D02PA09201C0, DAFMI22002R02 FS+65d | 20% | 43.2d | 2011-12-29 | 2012-03-03 | 23.05d | 0d | PLUMBING [1173.6 h]; Cost [61888.2 AED] | 61,888.15 | 12,377.63 | D02PA22011C0 | DT | C | 02 | PA | ME | 220 | 11 | BILL 5 | B05 | S2 | 2F | R00 | ACF07 | 220 |  |  | 2n | MEP |  |  | 20 |  |  |  |  |  |  | 20 | 0 |  |  |  |  |
| D02PA23008C0 |  | DT-02 ; 1st Fix, Inst of VCD's/FD's (Public Area) | 66d | 2011-09-05 A | 2012-01-19 | D02PA23023C0 | 5% | 62.7d | 2011-10-03 | 2011-12-24 | 67.55d | 44.5d | MECHANICAL [4312.8 h]; Cost [232964 AED] | 232,964.23 | 11,648.21 | D02PA23008C0 | DT | C | 02 | PA | ME | 230 | 08 | BILL 5 | B05 | S2 | 1F | R00 | ACF04 | 230 |  |  | 1S | MEP | M1F |  | 65 |  |  |  |  |  |  |  |  |  |  |  |  |
| D02PA23009C0 |  | DT-02 ; 2nd Fix, Inst of VAV'S CHW connection (Public Area) | 36d | 2011-09-05 A | 2011-12-14 | D02PA23017C0 | 10% | 32.4d | 2011-10-03 | 2011-11-16 | 66.35d | 0d | MECHANICAL [1684.8 h]; Cost [91006.1 AED] | 91,006.06 | 9,100.61 | D02PA23009C0 | DT | C | 02 | PA | ME | 230 | 09 | BILL 5 | B05 | S2 | 2F | R00 | ACF07 | 230 |  |  | 2n | MEP |  |  | 20 |  |  |  |  |  |  |  |  |  |  |  |  |
| D02PA08103C0 |  | DT-02 ; Door Frames (Public Area) | 42d | 2011-12-12 | 2012-01-30 | D02PA09201C0, GNHE08101C0 FS+93d, D02CV08103C0 SS+3d |  |  |  |  | 48d | 0d | ASSORTED DOORS [373 h]; Cost |  |  | D02PA08103C0 | DT | C | 02 | PA | DO | 081 | 03 | BILL 5 | B05 | S2 | DF | R00 | ACF06 | 081 |  |  |  |  |  |  |  |  |  |  |  | 316 | 947 |  |  |  | 08 |  |  |
| D02PA01005C0 |  | DT-02 ; 2nd, Wall Inspection by Consultant (Public Area) | 6d | 2012-01-28 | 2012-02-05 | D02PA22011C0, D02PA26009C0, D02PA40302C0 |  |  |  |  | 23.05d | 0d | Labor General [1.2 h]; Cost |  |  | D02PA01005C0 | DT | C | 02 | PA | ME | 010 | 05 | BILL 5 | B05 | S2 | WI | R00 | ACF07 | 010 |  |  | 2n | MEP |  |  | 15 |  |  |  |  |  |  |  |  |  |  |  |  |
| D02PA09205C0 |  | DT-02 ; Partitions Closing (Public Area) | 32d | 2012-02-05 | 2012-03-13 | D02PA01005C0, D02PA09203C0, D02PA22005C0, D02PA22019C0, DAFOA09206C1 FF, DAFMI22002R02 FS+65d, D02PA08103C0 FF, D02PA21117C0 FF, D02PA23009C0 FF, D02PA27001C0 FF, D02PA23008C0 FF, D02PA23015C0 FF |  |  |  |  | 23.05d | 0d | PARTITIONS [674 m]; PARTITIONS [3942 h]; Cost |  |  | D02PA09205C0 | DT | C | 02 | PA | PT | 092 | 05 | BILL 5 | B05 | S2 | FF | R00 | ACF06 | 092 |  |  |  | GP | P2F |  |  |  |  |  |  | 315 | 946 |  |  | R3 |  |  |  |
| D02PA09901C0 |  | DT-02 ; Wall Prime & 1st coat (Public Area) | 36d | 2012-03-13 | 2012-04-24 | D02PA09205C0, D02CO04455C0 FF |  |  |  |  | 23.05d | 0d | WALL PAINT [132 h]; WALL PAINT [163 m2]; Cost |  |  | D02PA09901C0 | DT | C | 02 | PA | PA | 099 | 01 | BILL 5 | B05 | S2 | 01 | R00 | ACF06 | 099 |  |  |  |  |  |  |  |  |  |  |  | 328 | 956 |  |  |  |  |  |  |
| D02PA26005C0 |  | DT-02 ; 2nd Fix, Wiring for Power/Lighting/Emergency (Public Area) | 36d | 2012-03-13 | 2012-04-24 | D02PA09205C0 |  |  |  |  | 95.05d | 0d | ELECTRICAL [436.8 h]; Cost |  |  | D02PA26005C0 | DT | C | 02 | PA | ME | 260 | 05 | BILL 5 | B05 | S2 | 2F | R00 | ACF07 | 260 |  |  | 2n | MEP |  |  |  |  |  |  |  |  |  |  |  |  |  |  |  |
| D02PA26007C0 |  | DT-02 ; 2nd Fix, Cable Pulling (Public Area) | 42d | 2012-03-13 | 2012-05-01 | D02PA09201C0, D02PA09205C0 |  |  |  |  | 141.8d | 118.75d | ELECTRICAL [6634.8 h]; Cost |  |  | D02PA26007C0 | DT | C | 02 | PA | ME | 260 | 07 | BILL 5 | B05 | S2 | 2F | R00 | ACF07 | 260 |  |  | 2n | MEP |  |  | 20 |  |  |  |  |  |  |  |  |  |  |  |  |
| D02PA26011C0 |  | DT-02 ; 2nd Fix, Inst of Equipment (DB) (Public Area) | 48d | 2012-03-13 | 2012-05-08 | D02PA09205C0 |  |  |  |  | 99.8d | 60d | ELECTRICAL [4054.8 h]; Cost |  |  | D02PA26011C0 | DT | C | 02 | PA | ME | 260 | 11 | BILL 5 | B05 | S2 | 2F | R00 | ACF04 | 260 |  |  | 2n | MEP |  |  |  |  |  |  |  |  |  |  |  |  |  | E |  |
| D02PA26053C0 |  | DT-02 ; 2nd Fix, Wiring / Cabling (Public Area) | 36d | 2012-03-13 | 2012-04-24 | D02PA26009C0, D02PA09205C0 |  |  |  |  | 147.8d | 124.75d | ELECTRICAL [436.8 h]; Cost |  |  | D02PA26053C0 | DT | C | 02 | PA | ME | 260 | 53 | BILL 5 | B05 | S2 | 2F | R00 | ACF07 | 260 |  |  | 2n | MEP |  |  |  |  |  |  |  | 389 | 977 |  |  |  |  |  |  |
| D02PA27020C0 |  | DT-02 ; 2nd Fix, Inst of ELV Equipment (Panels) (Public Area) | 42d | 2012-03-13 | 2012-05-01 | D02PA09205C0 |  |  |  |  | 105.8d | 66d | ELECTRICAL [1723.2 h]; Cost |  |  | D02PA27020C0 | DT | C | 02 | PA | ME | 270 | 20 | BILL 5 | B05 | S2 | 2F | R00 | ACF04 | 270 |  |  | 2n | MEP |  |  |  |  |  |  |  |  |  |  |  |  |  | E |  |
| D02PA05501C0 |  | DT-02 ; Handrails & balustrade (Public Area) | 32.75d | 2012-04-24 | 2012-05-31 | D02PA09901C0, DAFT805509C0, DAFT905509C0, DAFT305509C0, DAFT105509C0, DAFT1005509C0, DAFT2205509C0, DAFT505509C0 |  |  |  |  | 79.05d | 39.25d | SECONDARY STEEL [131 h]; Cost |  |  | D02PA05501C0 | DT | C | 02 | PA | SW | 055 | 01 | BILL 5 | B05 | S2 | 01 | R00 | ACF03 | a |  |  |  |  |  |  |  |  |  |  |  |  |  |  |  |  |  |  |  |
| D02PA09501C0 |  | DT-02 ; Ceiling Grid and Service Tile (Public Area) | 36d | 2012-04-24 | 2012-06-05 | D02PA09205C0 SS+15d, D02PA21117C0, D02PA23008C0, D02PA23009C0, D02PA23015C0, D02PA27001C0, DAFMI22003R02 FS+65d, D02PA09901C0 |  |  |  |  | 23.05d | 0d | CEILING GRID FOR GYPSUM [2439.87 h]; CEILING GRID FOR GYPSUM [208.75 m2]; Cost |  |  | D02PA09501C0 | DT | C | 02 | PA | CE | 095 | 01 | BILL 5 | B05 | S2 | 01 | R00 | ACF06 | 095 |  |  |  |  |  |  |  |  |  |  |  | 323 | 952 |  |  |  |  |  | R3 |
| D02PA26015C0 |  | DT-02 ; Final Fix, Termination & Gladding of Cables (Public Area) | 48d | 2012-04-24 | 2012-06-20 | D02PA26005C0 |  |  |  |  | 95.05d | 72d | ELECTRICAL [368.4 h]; Cost |  |  | D02PA26015C0 | DT | C | 02 | PA | ME | 260 | 15 | BILL 5 | B05 | S2 | FF | R00 | ACF07 | 260 |  |  | FF | MEP |  |  |  |  |  |  |  |  |  |  |  |  |  |  |  |
| D02PA09601C0 |  | DT-02 ; Flooring (Rubber & etc) (Public Area) | 36d | 2012-06-05 | 2012-07-18 | D02PA09901C0, DAFMI22003R02 FS+65d, D02PA09501C0, D02PA05501C0 FF |  |  |  |  | 39.8d | 0d | RUBBER FLOOR [168 h]; RUBBER FLOOR [415 m2]; Cost |  |  | D02PA09601C0 | DT | C | 02 | PA | FF | 096 | 01 | BILL 5 | B05 | S2 | 03 | R00 | ACF06 | RF |  |  |  |  |  |  |  |  |  |  |  | 326 | 955 |  |  |  |  |  | R3 |
| D02PA09602C0 |  | DT-02 ; Flooring (Stone) (Public Area) | 36d | 2012-06-05 | 2012-07-18 | D02PA09901C0, DAFMI22003R02 FS+65d, D02PA09501C0 |  |  |  |  | 39.8d | 0d | STONE FLOOR [1425 m2]; STONE FLOOR [1284 h]; Cost |  |  | D02PA09601C0 | DT | C | 02 | PA | FF | 096 | 01 | BILL 5 | B05 | S2 | 09 | R00 | ACF06 | ST |  |  |  |  |  |  |  |  |  |  |  | 326 | 955 |  |  |  |  |  | R3 |
| D02PA09905C0 |  | DT-02 ; Ceiling Prime & 1st coat (Public Area) | 36d | 2012-06-05 | 2012-07-18 | D02PA09501C0 |  |  |  |  | 77.8d | 0d | ASSORTED CEILING FINISH [89 h]; Cost |  |  | D02PA09905C0 | DT | C | 02 | PA | PA | 099 | 05 | BILL 5 | B05 | S2 | 01 | R00 | ACF06 | 099 |  |  |  |  |  |  |  |  |  |  |  | 330 | 958 |  |  |  |  |  |  |
| D02PA21115C0 |  | DT-02 ; 2nd Fix, Inst of Sprinkler droppers (Public Area) | 36d | 2012-06-05 | 2012-07-18 | D02PA09501C0 |  |  |  |  | 23.05d | 0d | MECHANICAL [2067.6 h]; Cost |  |  | D02PA21115C0 | DT | C | 02 | PA | ME | 211 | 15 | BILL 5 | B05 | S2 | 2F | R00 | ACF07 | 211 |  |  | 2n | MEP |  |  |  |  |  |  |  |  |  |  |  |  |  |  |  |
| D02PA23021C0 |  | DT-02 ; 2nd Fix, Inst of Flexible Duct & Plenum boxes (Public Area) | 36d | 2012-06-05 | 2012-07-18 | D02PA09205C0, D02PA09501C0 |  |  |  |  | 53.05d | 0d | MECHANICAL [274.8 h]; Cost |  |  | D02PA23021C0 | DT | C | 02 | PA | ME | 230 | 21 | BILL 5 | B05 | S2 | 2F | R00 | ACF07 | 230 |  |  | 2n | MEP |  |  |  |  |  |  |  |  |  |  |  |  |  |  |  |
| D02PA26017C0 |  | DT-02 ; Final Fix, Inst of Ceiling rose (Public Area) | 48d | 2012-06-05 | 2012-08-01 | D02PA09501C0 |  |  |  |  | 52.05d | 0d | ELECTRICAL [67.2 h]; Cost |  |  | D02PA26017C0 | DT | C | 02 | PA | ME | 260 | 17 | BILL 5 | B05 | S2 | FF | R00 | ACF07 | 260 |  |  | FF | MEP |  |  |  |  |  |  |  |  |  |  |  |  |  |  |  |
| D02PA27002C0 |  | DT-02 ; 2nd Fix, Wiring Droppers (Public Area) | 36d | 2012-06-05 | 2012-07-18 | D02PA09501C0 |  |  |  |  | 53.05d | 0d | ELECTRICAL [436.8 h]; Cost |  |  | D02PA27002C0 | DT | C | 02 | PA | ME | 270 | 02 | BILL 5 | B05 | S2 | 2F | R00 | ACF07 | 270 |  |  | 2n | MEP |  |  |  |  |  |  |  |  |  |  |  |  |  |  |  |
| D02PA40303C0 |  | DT-02 ; Final Fix, Pneumatic Station (Public Area) | 48d | 2012-06-05 | 2012-08-01 | D02PA09501C0 |  |  |  |  | 59.05d | 36d | MECHANICAL [5653.2 h]; Cost |  |  | C03E140303C0 | DT | C | 02 | PA | ME | 403 | 03 | BILL 5 | B05 | S2 | FF | R00 | ACF07 | 403 |  |  | FF | MEP |  |  |  |  |  |  |  |  |  |  |  |  |  |  |  |
| D02PA23019C0 |  | DT-02 ; Final Fix, Inst of Grilles & Diffusers (Public Area) | 48d | 2012-06-12 | 2012-08-08 | D02PA09501C0, D02PA23021C0 SS+6d |  |  |  |  | 53.05d | 30d | MECHANICAL [2560.8 h]; Cost |  |  | D02PA23019C0 | DT | C | 02 | PA | ME | 230 | 19 | BILL 5 | B05 | S2 | FF | R00 | ACF07 | 230 |  |  | FF | MEP |  |  |  |  |  |  |  |  |  |  |  |  |  |  |  |
| D02PA27030C0 |  | DT-02 ; Final Fix, Inst of ELV device (Detector/Speaker) (Public Area) | 48d | 2012-06-12 | 2012-08-08 | D02PA09501C0, D02PA27002C0 SS+6d |  |  |  |  | 53.05d | 30d | ELECTRICAL [2152.8 h]; Cost |  |  | D02PA27030C0 | DT | C | 02 | PA | ME | 270 | 30 | BILL 5 | B05 | S2 | FF | R00 | ACF07 | 270 |  |  | FF | MEP |  |  |  |  |  |  |  |  |  |  |  |  |  |  |  |
| D02PA26003C0 |  | DT-02 ; Final Fix, Inst of Light fittings (Public Area) | 48d | 2012-06-13 | 2012-08-09 | D02PA09501C0, D02PA26017C0 SS+7d |  |  |  |  | 52.05d | 29d | ELECTRICAL [6626.4 h]; Cost |  |  | D02PA26003C0 | DT | C | 02 | PA | ME | 260 | 03 | BILL 5 | B05 | S2 | FF | R00 | ACF07 | 260 |  |  | FF | MEP |  |  |  |  |  |  |  |  |  |  |  |  |  |  |  |
| D02PA08107C0 |  | DT-02 ; Doors (Public Area) | 42d | 2012-07-18 | 2012-09-08 | D02PA08103C0, D02PA09901C0, D02PA09601C0, D02PA09602C0 |  |  |  |  | 56.05d | 0d | ASSORTED DOORS [600 h]; ASSORTED DOORS [60 no]; Cost |  |  | D02PA08107C0 | DT | C | 02 | PA | DO | 081 | 07 | BILL 5 | B05 | S2 | DR | R00 | ACF06 | 081 |  |  |  |  |  |  |  |  |  |  |  | 317 | 948 |  |  |  | 08 |  |  |
| D02PA09701C0 |  | DT-02 ; Wall finishes (ST, WD, WC) (Public Area) | 36d | 2012-07-18 | 2012-09-01 | D02PA26011C0, D02PA27020C0, TVT0114211C0, TVT0214211C0, TVT1214211C0, TVT3114211C0, TVT3214255C0, TVT3314245C0, D02PA09602C0, D02PA09601C0 |  |  |  |  | 39.8d | 0d | ASSORTED WALL FINISH [757 h]; ASSORTED WALL FINISH [870 m2]; Cost |  |  | D02PA09701C0 | DT | C | 02 | PA | WF | 097 | 01 | BILL 5 | B05 | S2 | 01 | R00 | ACF06 | 097 |  |  |  |  |  |  |  |  |  |  |  | 105 | 1002 |  |  |  |  |  |  |
| D02PA09903C0 |  | DT-02 ; Wall Final Paint (Public Area) | 36d | 2012-07-18 | 2012-09-01 | D02PA09901C0, D02PA09905C0 |  |  |  |  | 77.8d | 36d | WALL PAINT [71 h]; WALL PAINT [88 m2]; Cost |  |  | D02PA09903C0 | DT | C | 02 | PA | PA | 099 | 03 | BILL 5 | B05 | S2 | 02 | R00 | ACF06 | 099 |  |  |  |  |  |  |  |  |  |  |  | 329 | 957 |  |  |  |  |  |  |
| D02PA21113C0 |  | DT-02 ; Final Fix, Inst of Sprinklers head/ Extinguisher (Public Area) | 48d | 2012-07-18 | 2012-09-15 | D02PA09501C0, D02PA21115C0 |  |  |  |  | 23.05d | 0d | MECHANICAL [403.2 h]; Cost |  |  | D02PA21113C0 | DT | C | 02 | PA | ME | 211 | 13 | BILL 5 | B05 | S2 | FF | R00 | ACF07 | 211 |  |  | FF | MEP |  |  |  |  |  |  |  |  |  |  |  |  |  |  |  |
| D02PA11001C0 |  | DT-02 ; Wall Protection (WP, CG, WG, FCG) (Public Area) | 24d | 2012-09-01 | 2012-09-29 | D02PA09701C0, D02PA09903C0 SS |  |  |  |  | 53.8d | 30.75d | FF&E [1216 h]; Cost |  |  | D02PA11001C0 | DT | C | 02 | PA | WF | 110 | 01 | BILL 5 | B05 | S2 | 03 | R00 | ACF08 | b |  |  |  |  |  |  |  |  |  |  |  | 326 | 1001 |  |  |  |  |  |  |
| D02PA11009C0 |  | DT-02 ; Signage (Public Area) | 16d | 2012-09-01 | 2012-09-19 | D02PA09701C0 |  |  |  |  | 61.8d | 38.75d | SIGNAGES [440 h]; SIGNAGES [439.68 no]; Cost |  |  | D02PA11009C0 | DT | C | 02 | PA | SA | 110 | 09 | BILL 5 | B05 | S2 | 09 | R00 | ACF08 | c |  |  |  |  |  |  |  |  |  |  |  | 322 | 951 |  |  |  | 08 |  |  |
| D02PA08709C0 |  | DT-02 ; Ironmongery (Public Area) | 15.75d | 2012-09-08 | 2012-09-25 | D02PA08107C0 |  |  |  |  | 56.05d | 33d | IRONMONGERY [280 h]; IRONMONGERY [28 no]; Cost |  |  | D02PA08709C0 | DT | C | 02 | PA | DO | 087 | 09 | BILL 5 | B05 | S2 | IM | R00 | ACF06 | 087 |  |  |  |  |  |  |  |  |  |  |  | 322 | 951 |  |  |  | 08 |  |  |
| D02PA01006C0 |  | DT-02 ; 2nd, Ceiling Inspection by Consultants (Public Area) | 4.75d | 2012-09-15 | 2012-09-19 | D02PA21115C0, D02PA23009C0, D02PA23015C0, D02PA27002C0, D02PA09501C0, D02PA21113C0, D02PA23019C0, D02PA26003C0, D02PA26017C0, D02PA27030C0, D02PA40303C0, D02PA26015C0 |  |  |  |  | 23.05d | 0d | Labor General [1.2 h]; Cost |  |  | D02PA01006C0 | DT | C | 02 | PA | ME | 010 | 06 | BILL 5 | B05 | S2 | CI | R00 | ACF07 | 010 |  |  | 2n | MEP |  |  |  |  |  |  |  |  |  |  |  |  |  |  |  |
| D02PA09503C0 |  | DT-02 ; Ceiling closure - ACT/Gypsum (Public Area) | 14.12d | 2012-09-19 | 2012-10-07 | D02PA01006C0, D02PA21115C0, D02PA26005C0, D02PA27001C0, D02PA27002C0, DAFOA09505C1 FF, D02PA09701C0, D02PA23021C0, D02PA26053C0, D02PA26007C0 |  |  |  |  | 23.05d | 0d | ASSORTED CEILING FINISH [494.46 h]; CEILING GYPSUM [68.47 h]; ASSORTED CEILING FINISH [804 m2]; CEILING GYPSUM [209 m2]; Cost |  |  | D02PA09503C0 | DT | C | 02 | PA | CE | 095 | 03 | BILL 5 | B05 | S2 | 02 | R00 | ACF06 | 095 |  |  |  |  |  |  |  |  |  |  |  | 324 | 953 |  |  |  |  |  | R3 |
| D02AR09677C1 |  | DT-02, Carpet Tile Finish (MD LOUNGE, ST LNG) | 0d | 2012-10-07 | 2012-10-07 | D02PA09903C0 SS, D02PA09907C0 SS |  |  |  |  | 46.8d | 36.52d | Cost |  |  |  | DT | C | 02 | AR | FF | 096 |  |  | B05 |  |  | R00 | ACF06 | CPT |  |  |  | CPT |  |  |  |  |  |  |  |  |  |  |  |  |  |  |  |
| D02PA09907C0 |  | DT-02 ; Ceiling Final paint (Public Area) | 12d | 2012-10-07 | 2012-10-21 | D02PA09601C0, D02PA09905C0, D02PA09602C0, D02PA09503C0 |  |  |  |  | 34.92d | 0d | ASSORTED CEILING FINISH [47 h]; Cost |  |  | D02PA09907C0 | DT | C | 02 | PA | PA | 099 | 07 | BILL 5 | B05 | S2 | 02 | R00 | ACF06 | 099 |  |  |  |  |  |  |  |  |  |  |  | 331 | 959 |  |  |  |  |  |  |
| D02PA26019C0 |  | DT-02 ; Final Fix, Inst of Switch/Sockets (Public Area) | 12d | 2012-10-07 | 2012-10-21 | D02PA09901C0, D02PA09503C0 |  |  |  |  | 23.05d | 0d | ELECTRICAL [610.8 h]; Cost |  |  | D02PA26019C0 | DT | C | 02 | PA | ME | 260 | 19 | BILL 5 | B05 | S2 | FF | R00 | ACF07 | 260 |  |  | FF | MEP |  |  |  |  |  |  |  |  |  |  |  |  |  |  |  |

| ID | WBS | Activity | Duration | Start | Finish | Predecessors | Complete | Remaining | Planned start | Planned finish | Total float | Free float | Resources | Cost | Actual cost | change id | CCAD BUILDING(SET) | CCAD PHASE(SET) | CCAD FLOOR(SET) | CCAD ZONE(SET) | CCAD WORK(SET) | CCAD SECTION(SET) | CCAD SERIAL No.(SET) | CCAD CBS(SET) | CCAD BILL(SET) | CCAD HANDOVER(SET) | CCAD TAG(SET) | CCAD REV(SET) | CCADACF (SET) | CCAD SSCF | RENZ % COMPLETE | Claimed This Month | CCAD SUB ZONE MEP(SET) | CCAD CSA | Act Selector % | user_number8 | user_integer1 | user_integer2 | user_number7 | Change Order # | NEW ACTIVITY ID | P_811 | P_711 | July2011 Target% Complete | CCAD DIVISION(SET) | CCAD MEQ | R3 Finish |
| --- | --- | --- | --- | --- | --- | --- | --- | --- | --- | --- | --- | --- | --- | --- | --- | --- | --- | --- | --- | --- | --- | --- | --- | --- | --- | --- | --- | --- | --- | --- | --- | --- | --- | --- | --- | --- | --- | --- | --- | --- | --- | --- | --- | --- | --- | --- | --- |
|  | 10 | **Precommissioning Tesing & snagging (Lobby, Wait, Corridor, Courtyard)** |  | 2012-10-21 | 2012-12-06 |  |  |  |  |  |  |  |  |  |  |  |  |  |  |  |  |  |  |  |  |  |  |  |  |  |  |  |  |  |  |  |  |  |  |  |  |  |  |  |  |  |  |
| D02TS01806C0 |  | DT-02 ; MEP de-snag, FIREM sign-off | 11.88d | 2012-10-21 | 2012-11-05 | D02PA26015C0, D02PA21113C0, D02PA23019C0, D02PA26017C0, D02PA26003C0, D02PA27030C0, D02PA40303C0, D02PA26019C0 |  |  |  |  | 23.05d | 0d | TESTING & COMMISSIONING [1275 h]; Cost |  |  | D02TS01801C0 | DT | C | 02 | TS | SC | 018 | 01 | BILL 5 | B05 | S2 | 01 | R00 | ACF07 | 018 |  |  |  |  |  |  |  |  |  |  |  |  |  |  |  |  |  |
| D02TS01811C0 |  | DT-02 ; Touch-up & Clean / JV inspection /CIR /De-snag | 18d | 2012-11-05 | 2012-11-27 | D02CO04413C0, D02CO04417C0, D02PA08103C0, D02PA08709C0, D02PA09203C0, D02PA09601C0, D02PA09701C0, D02PA09903C0, D02PA09907C0, D02PA11001C0, D02PA11009C0, D02TS01806C0, D02PA05501C0, D02PA09602C0, D02PA09503C0 |  |  |  |  | 23.05d | 0d | TESTING & COMMISSIONING [213 h]; Cost |  |  | D02TS01802C0 | DT | C | 02 | TS | SC | 018 | 02 | BILL 5 | B05 | S2 | 02 | R00 | ACF07 | 018 |  |  |  |  |  |  |  |  |  |  |  |  |  |  |  |  |  |
| D02TS01816C0 |  | DT-02 ; Consultant's final de-snag inspection | 7d | 2012-11-27 | 2012-12-06 | D02TS01811C0 |  |  |  |  | 23.05d | 12.78d | Labor General [1 h]; Cost |  |  | D02TS01803C0 | DT | C | 02 | TS | SC | 018 | 03 | BILL 5 | B05 | S2 | 03 | R00 | ACF07 | 018 |  |  |  |  |  |  |  |  |  |  |  |  |  |  |  |  |  |
|  | 04 | **Pat Rm-Pre Admit, Office, ST LKR & TLT** |  | 2011-03-29 | 2012-12-18 |  |  |  |  |  |  |  |  |  |  |  |  |  |  |  |  |  |  |  |  |  |  |  |  |  |  |  |  |  |  |  |  |  |  |  |  |  |  |  |  |  |  |
| D02OF23001C0 |  | DT-02 ; 1st Fix, Inst. of Supports for MEP (Admit, Office) | 27d | 2011-03-29 A | 2011-06-02 A | D02S107807C0 SS, D02S307807C0 SS | 100% |  | 2011-03-14 | 2011-04-14 |  |  | MECHANICAL [1338 h]; Cost [75432.9 AED] | 75,432.94 | 75,432.94 | D02OF23001C0 | DT | C | 02 | OF | ME | 230 | 01 | BILL 5 | B05 | S2 | 1F | R00 | ACF04 | 230 | 90 | 8750.22 | 1S | MEP | M1F |  |  |  |  |  |  |  |  |  |  |  |  |
| D02OF21111C0 |  | DT-02 ; 1st Fix, Inst of Sprinkler main pipe (Admit, Office) | 44d | 2011-03-31 A | 2011-06-23 A | D02OF22019C0 SS+7d, D02OF23001C0, D02S107807C0, D02S307807C0 | 100% |  | 2011-05-18 | 2011-07-10 |  |  | MECHANICAL [981.6 h]; Cost [53543.7 AED] | 53,543.69 | 53,543.69 | D02OF21111C0 | DT | C | 02 | OF | ME | 211 | 11 | BILL 5 | B05 | S2 | 1F | R00 | ACF04 | 211 | 60 | 24856.43 | 1S | MEP | M1F |  |  |  |  |  |  |  |  |  |  |  |  |
| D02OF22019C0 |  | DT-02 ; 1st Fix, Inst of Drainage pipe (ceiling) (Admit, Office) | 62d | 2011-03-31 A | 2011-06-08 A | D02OF23001C0, D02OF27010C0 SS+10d, D02S107807C0, D02S307807C0 | 100% |  | 2011-05-10 | 2011-07-23 |  |  | PLUMBING [1173.6 h]; Cost [61888.2 AED] | 61,888.15 | 61,888.15 | D02OF22019C0 | DT | C | 02 | OF | ME | 220 | 19 | BILL 5 | B05 | S2 | 1F | R00 | ACF04 | 220 | 60 | 29400.62 | 1S | MEP | M1F |  |  |  |  |  |  |  |  |  |  |  |  |
| D02OF09201C0 |  | DT-02 ; Metal Studs (Admit, Office) | 90d | 2011-04-11 A | 2011-11-24 | D02LA09201C0 SS+6d, D02OF23001C0, D02PA09201C0 | 78% | 19.8d | 2011-07-02 | 2011-10-16 | 16.4d | 0d | PARTITIONS [7131 h]; PARTITIONS - Metal Studs [1223 m]; Cost |  |  | D02OF09201C0 | DT | C | 02 | OF | PT | 092 | 01 | BILL 5 | B05 | S2 | 1F | R00 | ACF06 | 092 | 35 | 114260 |  | GP | PMS | 0 | 0 | 0 | 0 | 313 | 944 | 75 | 67 |  |  |  |  |
| D02OF23017C0 |  | DT-02 ; 1st Fix, Inst of CHW pipe (Admit, Office) | 180d | 2011-04-12 A | 2011-10-31 | D02OF21111C0 SS+10d, D02OF23001C0, D02S107807C0, D02S307807C0 | 85% | 27d | 2011-06-02 | 2012-01-09 | 52.1d | 0d | MECHANICAL [6325.2 h]; Cost [345418 AED] | 345,418.28 | 293,605.54 | D02OF23017C0 | DT | C | 02 | OF | ME | 230 | 17 | BILL 5 | B05 | S2 | 1F | R00 | ACF04 | 230 | 20 | 120195.65 | 1S | MEP | M1F |  |  |  |  |  |  |  |  | 85 |  |  |  |
| D02OF27010C0 |  | DT-02 ; 1st Fix, Inst of Trunking for ELV system (Admit, Office) | 100d | 2011-04-16 A | 2011-11-03 | D02OF23001C0, D02OF26001C0 SS+12d, D02S107807C0, D02S307807C0 | 70% | 30d | 2011-04-28 | 2011-08-24 | 52.1d | 0d | ELECTRICAL [1689.6 h]; Cost [88597.9 AED] | 88,597.89 | 62,018.53 | D02OF27010C0 | DT | C | 02 | OF | ME | 270 | 10 | BILL 5 | B05 | S2 | 1F | R00 | ACF04 | 270 | 25 | 56531.16 | 1S | MEP | M1F |  |  |  |  |  |  |  |  | 80 |  |  |  |
| D02OF26001C0 |  | DT-02 ; 1st Fix, Inst of Trunking/Conduiting (Admit, Office) | 100d | 2011-04-21 A | 2011-11-03 | D02OF23001C0, D02S107807C0, D02S307807C0 | 70% | 30d | 2011-04-14 | 2011-08-10 | 52.1d | 0d | ELECTRICAL [824.4 h]; Cost [42423.2 AED] | 42,423.24 | 29,696.27 | D02OF26001C0 | DT | C | 02 | OF | ME | 260 | 01 | BILL 5 | B05 | S2 | 1F | R00 | ACF04 | 260 | 25 | 29992.29 | 1S | MEP | M1F |  |  |  |  |  |  |  |  | 85 |  |  |  |
| D02OF22005C0 |  | DT-02 ; 1st Fix, Inst of Water supply pipe (ceiling) (Admit, Office) | 120d | 2011-05-08 A | 2011-11-03 | D02OF22019C0 SS+7d, D02OF23001C0, D02S107807C0, D02S307807C0 | 75% | 30d | 2011-06-02 | 2011-10-24 | 86d | 72.2d | PLUMBING [4896 h]; Cost [264473 AED] | 264,473.49 | 198,355.12 | D02OF22005C0 | DT | C | 02 | OF | ME | 220 | 05 | BILL 5 | B05 | S2 | 1F | R00 | ACF04 | 220 | 55 |  | 1S | MEP | M1F |  |  |  |  |  |  |  |  | 75 |  |  |  |
| D02OF09203C0 |  | DT-02 ; Partitions 1st face (Admit, Office) | 90d | 2011-05-15 A | 2011-12-19 | D02OF09201C0 SS+12d, D02OF23017C0, D02OF23023C0 FF, D02OF26013C0 FF, D02OF26001C0 FF, D02OF27010C0 FF, D02OF22007C0 FF | 59% | 36.9d | 2011-06-15 | 2011-10-02 | 52.1d | 38.3d | PARTITIONS [1223 m]; PARTITIONS [5577 h]; Cost |  |  | D02OF09203C0 | DT | C | 02 | OF | PT | 092 | 03 | BILL 5 | B05 | S2 | 2F | R00 | ACF06 | 092 | 10 | 70384.16 |  | GP | P1F | 0 | 0 | 0 | 0 | 314 | 945 | 50 | 27 |  |  |  |  |
| D02OF21117C0 |  | DT-02 ; 1st Fix, Inst of Sprinkler branch pipe (Admit, Office) | 200d | 2011-05-15 A | 2011-12-20 | D02OF09201C0, D02OF21111C0 | 90% | 20d | 2011-07-18 | 2012-03-18 | 99d | 85.2d | MECHANICAL [1441.2 h]; Cost [78749.8 AED] | 78,749.79 | 70,874.81 | D02OF21117C0 | DT | C | 02 | OF | ME | 211 | 17 | BILL 5 | B05 | S2 | 1F | R00 | ACF04 | 211 | 60 | 27387.39 | 1S | MEP | M1F |  |  |  |  |  |  |  |  | 90 |  |  |  |
| D02OF23023C0 |  | DT-02 ; 1st Fix, Inst of Main Ducting (Admit, Office) | 180d | 2011-05-15 A | 2011-10-31 | D02OF23001C0, D02OF23017C0 SS+7d, D02S107807C0, D02S307807C0 | 85% | 27d | 2011-06-11 | 2012-01-17 | 74.3d | 0d | MECHANICAL [11402.4 h]; Cost [622619 AED] | 622,619.08 | 529,226.22 | D02OF23023C0 | DT | C | 02 | OF | ME | 230 | 23 | BILL 5 | B05 | S2 | 1F | R00 | ACF04 | 230 | 25 | 324984.37 | 1S | MEP | M1F |  |  |  |  |  |  |  |  | 85 |  |  |  |
| D02OF26013C0 |  | DT-02 ; 1st Fix, Inst of Cable Tray (Admit, Office) | 100d | 2011-05-15 A | 2011-11-03 | D02OF23001C0, D02OF27010C0 SS+10d, D02S107807C0, D02S307807C0 | 70% | 30d | 2011-06-02 | 2011-10-01 | 86d | 0d | ELECTRICAL [430.8 h]; Cost [23263.3 AED] | 23,263.34 | 16,284.34 | D02OF26013C0 | DT | C | 02 | OF | ME | 260 | 13 | BILL 5 | B05 | S2 | 1F | R00 | ACF04 | 260 | 10 | 18901.19 | 1S | MEP | M1F |  |  |  |  |  |  |  |  | 80 |  |  |  |
| D02OF22007C0 |  | DT-02 ; 1st Fix, Inst of Medical Gas pipe (Admit, Office) | 90d | 2011-06-02 A | 2011-11-14 | D02OF21111C0 SS+14d, D02OF23001C0, D02S107807C0, D02S307807C0 | 60% | 36d | 2011-06-02 | 2011-09-19 | 66.8d | 27.9d | PLUMBING [1616.4 h]; Cost [83529.6 AED] | 83,529.57 | 50,117.74 | D02OF22007C0 | DT | C | 02 | OF | ME | 220 | 07 | BILL 5 | B05 | S2 | 1F | R00 | ACF04 | 220 |  | 82285.29 | 1S | MEP | M1F |  |  |  |  |  |  |  |  | 85 |  |  |  |
| D02OF22015C0 |  | DT-02 ; 2nd Fix, Medical Gas pipe (Admit, Office) | 54d | 2011-06-07 A | 2012-01-18 | D02OF09201C0, D02OF22007C0 SS | 20% | 43.2d | 2011-08-04 | 2011-10-09 | 21.8d | 8d | PLUMBING [1616.4 h]; Cost [83529.6 AED] | 83,529.57 | 16,705.91 | D02OF22015C0 | DT | C | 02 | OF | ME | 220 | 15 | BILL 5 | B05 | S2 | 2F | R00 | ACF07 | 220 |  | 19361.24 | 2n | MEP |  |  |  |  |  |  |  |  |  | 25 |  |  |  |
| D02OF23015C0 |  | DT-02 ; 2nd Fix, Insulation of CHW pipe & Duct (Admit, Office) | 100d | 2011-06-08 A | 2012-01-25 | D02OF23009C0, D02OF23017C0, D02OF23023C0 | 65% | 35d | 2011-08-18 | 2011-12-21 | 99.6d | 85.8d | MECHANICAL [5311.2 h]; Cost [286617 AED] | 286,617.06 | 186,301.09 | D02OF23015C0 | DT | C | 02 | OF | ME | 230 | 15 | BILL 5 | B05 | S2 | 2F | R00 | ACF07 | 230 |  | 34107.03 | 2n | MEP |  |  |  |  |  |  |  |  |  | 65 |  |  |  |
| D02OF27001C0 |  | DT-02 ; 1st Fix, Wiring/ Cabling work (Admit, Office) | 84d | 2011-06-09 A | 2012-01-14 | D02OF26001C0, D02OF26013C0, D02OF27010C0 | 35% | 54.6d | 2011-08-08 | 2011-11-20 | 109.4d | 95.6d | ELECTRICAL [436.8 h]; Cost [21894.9 AED] | 21,894.91 | 7,663.22 | D02OF27001C0 | DT | C | 02 | OF | ME | 270 | 01 | BILL 5 | B05 | S2 | 1F | R00 | ACF04 | 270 |  | 9027.43 | 1S | MEP | M1F |  |  |  |  |  |  |  |  | 35 |  |  |  |
| D02OF26009C0 |  | DT-02 ; 2nd Fix, Inst of Wall conduites (Admit, Office) | 54d | 2011-07-10 A | 2012-01-24 | D02OF09201C0 | 10% | 48.6d | 2011-07-07 | 2011-09-10 | 16.4d | 2.6d | ELECTRICAL [824.4 h]; Cost [42423.2 AED] | 42,423.24 | 4,242.32 | D02OF26009C0 | DT | C | 02 | OF | ME | 260 | 09 | BILL 5 | B05 | S2 | 2F | R00 | ACF07 | 260 |  |  | 2n | MEP |  |  |  |  |  |  |  |  |  | 15 |  |  |  |
| D02OF22011C0 |  | DT-02 ; 2nd Fix, Drainage/Water pipe (wall) (Admit, Office) | 54d | 2011-08-10 A | 2012-01-28 | D02OF09201C0, DAFMI22002R02 FS+65d, DAFMI22002R20 FS+65d | 20% | 43.2d | 2011-12-29 | 2012-03-03 | 13.8d | 0d | PLUMBING [1173.6 h]; Cost [61888.2 AED] | 61,888.15 | 12,377.63 | D02OF22011C0 | DT | C | 02 | OF | ME | 220 | 11 | BILL 5 | B05 | S2 | 2F | R00 | ACF07 | 220 |  |  | 2n | MEP |  |  |  |  |  |  |  | 20 | 0 | 15 |  |  |  |
| D02OF23008C0 |  | DT-02 ; 1st Fix, Inst of VCD's/FD's (Admit, Office) | 66d | 2011-09-05 A | 2012-01-19 | D02OF23023C0 | 5% | 62.7d | 2011-10-03 | 2011-12-24 | 74.3d | 60.5d | MECHANICAL [4312.8 h]; Cost [232964 AED] | 232,964.23 | 11,648.21 | D02OF23008C0 | DT | C | 02 | OF | ME | 230 | 08 | BILL 5 | B05 | S2 | 1F | R00 | ACF04 | 230 |  |  | 1S | MEP | M1F |  |  |  |  |  |  |  |  | 85 |  |  |  |
| D02OF23009C0 |  | DT-02 ; 2nd Fix, Inst of VAV'S CHW connection (Admit, Office) | 36d | 2011-09-05 A | 2011-12-14 | D02OF23017C0 | 10% | 32.4d | 2011-10-03 | 2011-11-16 | 99.6d | 0d | MECHANICAL [1684.8 h]; Cost [91006.1 AED] | 91,006.06 | 9,100.61 | D02OF23009C0 | DT | C | 02 | OF | ME | 230 | 09 | BILL 5 | B05 | S2 | 2F | R00 | ACF07 | 230 |  |  | 2n | MEP |  |  |  |  |  |  |  |  |  | 25 |  |  |  |
| D02OF08103C0 |  | DT-02 ; Door Frames (Admit, Office) | 42d | 2011-11-27 | 2012-01-16 | D02OF09201C0 SS+14d, GNHE08101C0 FS+93d |  |  |  |  | 48d | 0d | ASSORTED DOORS [679 h]; Cost |  |  | D02OF08103C0 | DT | C | 02 | OF | DO | 081 | 03 | BILL 5 | B05 | S2 | DF | R00 | ACF06 | 081 |  |  |  |  |  |  |  |  |  | 316 | 947 |  |  |  | 08 |  |  |
| D02OF05511C0 |  | DT-02 ; Wall reinforcement for MEP/Medical (Admit, Office) | 23.88d | 2011-12-07 | 2012-01-04 | D02OF09201C0, DAFMI22002R02 FS+65d |  |  |  |  | 39.12d | 25.32d | SECONDARY STEEL [48 h]; Cost |  |  | D02OF05511C0 | DT | C | 02 | OF | SW | 055 | 11 | BILL 5 | B05 | S2 | 03 | R00 | ACF03 | b |  |  |  |  |  |  |  |  |  |  |  |  |  |  |  |  |  |
| D02OF01005C0 |  | DT-02 ; 2nd, Wall Inspection by Consultant (Admit, Office) | 6d | 2012-01-28 | 2012-02-05 | D02OF22011C0, D02OF22015C0, D02OF26009C0 |  |  |  |  | 13.8d | 0d | Labor General [1.2 h]; Cost |  |  | D02OF01005C0 | DT | C | 02 | OF | ME | 010 | 05 | BILL 5 | B05 | S2 | WI | R00 | ACF07 | 010 |  |  | 2n | MEP |  |  |  |  |  |  |  |  |  | 25 |  |  |  |
| D02OF09205C0 |  | DT-02 ; Partitions Closing (Admit, Office) | 48d | 2012-02-05 | 2012-04-01 | D02OF01005C0, D02OF05511C0, D02OF09203C0, D02OF22005C0, D02OF22019C0, DAFOA09206C1 FF, DAFMI22002R02 FS+65d, D02OF21117C0 FF, D02OF23008C0 FF |  |  |  |  | 13.8d | 0d | PARTITIONS [1223 m]; PARTITIONS [7161 h]; Cost |  |  | D02OF09205C0 | DT | C | 02 | OF | PT | 092 | 05 | BILL 5 | B05 | S2 | FF | R00 | ACF06 | 092 |  |  |  | GP | P2F |  |  |  |  | 315 | 946 |  |  |  |  |  |  |
| D02OF07103C0 |  | DT-02 ; Waterproofing (Admit, Office) | 12d | 2012-04-01 | 2012-04-15 | D02OF08103C0, D02OF09205C0 |  |  |  |  | 57.92d | 0d | THERMAL & MOISTURE [472 h]; THERMAL & MOISTURE [3116 m2]; Cost |  |  | D02OF07103C0 | DT | C | 02 | OF | FF | 071 | 03 | BILL 5 | B05 | S2 | 01 | R00 | ACF03 | 071 |  |  |  |  |  |  |  |  |  | 105 | 999 |  |  |  |  |  |  |
| D02OF09901C0 |  | DT-02 ; Wall Prime & 1st coat (Admit, Office) | 30d | 2012-04-01 | 2012-05-06 | D02OF09205C0 |  |  |  |  | 13.8d | 0d | WALL PAINT [1437 h]; WALL PAINT [1794 m2]; Cost |  |  | D02OF09901C0 | DT | C | 02 | OF | PA | 099 | 01 | BILL 5 | B05 | S2 | 01 | R00 | ACF06 | 099 |  |  |  |  |  |  |  |  |  | 328 | 956 |  |  |  |  |  |  |
| D02OF26005C0 |  | DT-02 ; 2nd Fix, Wiring for Power/Lighting/Emergency (Admit, Office) | 36d | 2012-04-01 | 2012-05-13 | D02OF09205C0 |  |  |  |  | 73.8d | 0d | ELECTRICAL [436.8 h]; Cost |  |  | D02OF26005C0 | DT | C | 02 | OF | ME | 260 | 05 | BILL 5 | B05 | S2 | 2F | R00 | ACF07 | 260 |  |  | 2n | MEP |  |  |  |  |  |  |  |  |  |  |  |  |  |
| D02OF26007C0 |  | DT-02 ; 2nd Fix, Cable Pulling (Admit, Office) | 42d | 2012-04-01 | 2012-05-20 | D02OF09201C0 SS+6d, D02OF09205C0 |  |  |  |  | 121.8d | 108d | ELECTRICAL [6634.8 h]; Cost |  |  | D02OF26007C0 | DT | C | 02 | OF | ME | 260 | 07 | BILL 5 | B05 | S2 | 2F | R00 | ACF07 | 260 |  |  | 2n | MEP |  |  |  |  |  |  |  |  |  |  |  |  |  |
| D02OF26011C0 |  | DT-02 ; 2nd Fix, Inst of Equipment (DB) (Admit, Office) | 48d | 2012-04-01 | 2012-05-27 | D02OF09205C0 |  |  |  |  | 79.8d | 54d | ELECTRICAL [4054.8 h]; Cost |  |  | D02OF26011C0 | DT | C | 02 | OF | ME | 260 | 11 | BILL 5 | B05 | S2 | 2F | R00 | ACF04 | 260 |  |  | 2n | MEP |  |  |  |  |  |  |  |  |  |  |  | E |  |
| D02OF26053C0 |  | DT-02 ; 2nd Fix, Wiring / Cabling (Admit, Office) | 36d | 2012-04-01 | 2012-05-13 | D02OF26009C0, D02OF09203C0, D02OF09205C0 |  |  |  |  | 127.8d | 114d | ELECTRICAL [436.8 h]; Cost |  |  | D02OF26053C0 | DT | C | 02 | OF | ME | 260 | 53 | BILL 5 | B05 | S2 | 2F | R00 | ACF07 | 260 |  |  | 2n | MEP |  |  |  |  |  | 389 | 977 |  |  |  |  |  |  |
| D02OF27020C0 |  | DT-02 ; 2nd Fix, Inst of ELV Equipment (Panels) (Admit, Office) | 42d | 2012-04-01 | 2012-05-20 | D02OF09205C0 |  |  |  |  | 85.8d | 60d | ELECTRICAL [1723.2 h]; Cost |  |  | D02OF27020C0 | DT | C | 02 | OF | ME | 270 | 20 | BILL 5 | B05 | S2 | 2F | R00 | ACF04 | 270 |  |  | 2n | MEP |  |  |  |  |  |  |  |  |  |  |  | E |  |
| D02OF09305C0 |  | DT-02 ; Ceramic floor tile (Admit, Office) | 27.88d | 2012-04-15 | 2012-05-17 | D02OF07103C0 |  |  |  |  | 57.92d | 0d | CERAMIC FLOOR TILES [168 h]; CERAMIC FLOOR TILES [93 m2]; Cost |  |  | D02OF09305C0 | DT | C | 02 | OF | FF | 093 | 05 | BILL 5 | B05 | S2 | 02 | R00 | ACF06 | CT |  |  |  |  |  |  |  |  |  | 106 | 1000 |  |  |  |  |  |  |
| D02OF05501C0 |  | DT-02 ; Handrails & balustrade (Admit, Office) | 35.88d | 2012-05-06 | 2012-06-18 | D02OF09901C0 |  |  |  |  | 49.92d | 36.12d | SECONDARY STEEL [238 h]; Cost |  |  | D02OF05501C0 | DT | C | 02 | OF | SW | 055 | 01 | BILL 5 | B05 | S2 | 01 | R00 | ACF03 | a |  |  |  |  |  |  |  |  |  |  |  |  |  |  |  |  |  |
| D02OF09501C0 |  | DT-02 ; Ceiling Grid and Service Tile (Admit, Office) | 36d | 2012-05-06 | 2012-06-18 | D02OF09205C0 SS+15d, D02OF21117C0, D02OF23008C0, D02OF23009C0, D02OF23015C0, D02OF27001C0, DAFMI22003R02 FS+65d, D02OF09901C0 |  |  |  |  | 13.8d | 0d | CEILING GRID FOR GYPSUM [4436.57 h]; CEILING GRID FOR GYPSUM [379.54 m2]; Cost |  |  | D02OF09501C0 | DT | C | 02 | OF | CE | 095 | 01 | BILL 5 | B05 | S2 | 01 | R00 | ACF06 | 095 |  |  |  |  |  |  |  |  |  | 323 | 952 |  |  |  |  |  | R3 |
| D02OF26015C0 |  | DT-02 ; Final Fix, Termination & Gladding of Cables (Admit, Office) | 48d | 2012-05-13 | 2012-07-09 | D02OF26005C0 |  |  |  |  | 73.8d | 43d | ELECTRICAL [368.4 h]; Cost |  |  | D02OF26015C0 | DT | C | 02 | OF | ME | 260 | 15 | BILL 5 | B05 | S2 | FF | R00 | ACF07 | 260 |  |  | FF | MEP |  |  |  |  |  |  |  |  |  |  |  |  |  |
| D02OF22025C0 |  | DT-02 ; Final Fix, Inst of Sanitary Ware (Admit, Office) | 48d | 2012-05-17 | 2012-07-14 | D02OF09205C0, D02OF09305C0, A10230 FS+148d |  |  |  |  | 57.92d | 0d | PLUMBING [1917.6 h]; Cost |  |  | D02OF22025C0 | DT | C | 02 | OF | ME | 220 | 25 | BILL 5 | B05 | S2 | FF | R00 | ACF07 | 220 |  |  | FF | MEP |  |  |  |  |  |  |  |  |  |  |  |  |  |
| D02OF09601C0 |  | DT-02 ; Flooring (Rubber & etc) (Admit, Office) | 36d | 2012-06-18 | 2012-07-30 | D02OF09901C0, DAFMI22003R02 FS+65d, D02OF09501C0, D02OF05501C0 FF |  |  |  |  | 13.8d | 0d | RUBBER FLOOR [304 h]; RUBBER FLOOR [753 m2]; Cost |  |  | D02OF09601C0 | DT | C | 02 | OF | FF | 096 | 01 | BILL 5 | B05 | S2 | 03 | R00 | ACF06 | RF |  |  |  |  |  |  |  |  |  | 326 | 955 |  |  |  |  |  | R3 |
| D02OF09905C0 |  | DT-02 ; Ceiling Prime & 1st coat (Admit, Office) | 36d | 2012-06-18 | 2012-07-30 | D02OF09501C0 |  |  |  |  | 67.8d | 0d | ASSORTED CEILING FINISH [161 h]; Cost |  |  | D02OF09905C0 | DT | C | 02 | OF | PA | 099 | 05 | BILL 5 | B05 | S2 | 01 | R00 | ACF06 | 099 |  |  |  |  |  |  |  |  |  | 330 | 958 |  |  |  |  |  |  |
| D02OF21115C0 |  | DT-02 ; 2nd Fix, Inst of Sprinkler droppers (Admit, Office) | 36d | 2012-06-18 | 2012-07-30 | D02OF09501C0 |  |  |  |  | 36.8d | 0d | MECHANICAL [2067.6 h]; Cost |  |  | D02OF21115C0 | DT | C | 02 | OF | ME | 211 | 15 | BILL 5 | B05 | S2 | 2F | R00 | ACF07 | 211 |  |  | 2n | MEP |  |  |  |  |  |  |  |  |  |  |  |  |  |
| D02OF22029C0 |  | DT-02 ; Final Fix, Medical Gas pipe (Admit, Office) | 18d | 2012-06-18 | 2012-07-09 | D02OF09501C0 |  |  |  |  | 73.8d | 43d | PLUMBING [1616.4 h]; Cost |  |  | D02OF22029C0 | DT | C | 02 | OF | ME | 220 | 29 | BILL 5 | B05 | S2 | FF | R00 | ACF07 | 220 |  |  | FF | MEP |  |  |  |  |  |  |  |  |  |  |  |  |  |
| D02OF23021C0 |  | DT-02 ; 2nd Fix, Inst of Flexible Duct & Plenum boxes (Admit, Office) | 36d | 2012-06-18 | 2012-07-30 | D02OF09205C0, D02OF09501C0 |  |  |  |  | 37.8d | 0d | MECHANICAL [274.8 h]; Cost |  |  | D02OF23021C0 | DT | C | 02 | OF | ME | 230 | 21 | BILL 5 | B05 | S2 | 2F | R00 | ACF07 | 230 |  |  | 2n | MEP |  |  |  |  |  |  |  |  |  |  |  |  |  |
| D02OF26017C0 |  | DT-02 ; Final Fix, Inst of Ceiling rose (Admit, Office) | 48d | 2012-06-18 | 2012-08-13 | D02OF09501C0 |  |  |  |  | 36.8d | 0d | ELECTRICAL [67.2 h]; Cost |  |  | D02OF26017C0 | DT | C | 02 | OF | ME | 260 | 17 | BILL 5 | B05 | S2 | FF | R00 | ACF07 | 260 |  |  | FF | MEP |  |  |  |  |  |  |  |  |  |  |  |  |  |
| D02OF27002C0 |  | DT-02 ; 2nd Fix, Wiring Droppers (Admit, Office) | 36d | 2012-06-18 | 2012-07-30 | D02OF09501C0 |  |  |  |  | 30.8d | 0d | ELECTRICAL [436.8 h]; Cost |  |  | D02OF27002C0 | DT | C | 02 | OF | ME | 270 | 02 | BILL 5 | B05 | S2 | 2F | R00 | ACF07 | 270 |  |  | 2n | MEP |  |  |  |  |  |  |  |  |  |  |  |  |  |
| D02OF23019C0 |  | DT-02 ; Final Fix, Inst of Grilles & Diffusers (Admit, Office) | 48d | 2012-06-25 | 2012-08-22 | D02OF09501C0, D02OF23021C0 SS+6d |  |  |  |  | 37.8d | 7d | MECHANICAL [2560.8 h]; Cost |  |  | D02OF23019C0 | DT | C | 02 | OF | ME | 230 | 19 | BILL 5 | B05 | S2 | FF | R00 | ACF07 | 230 |  |  | FF | MEP |  |  |  |  |  |  |  |  |  |  |  |  |  |
| D02OF21113C0 |  | DT-02 ; Final Fix, Inst of Sprinklers head/ Extinguisher (Admit, Office) | 48d | 2012-06-26 | 2012-08-23 | D02OF09501C0, D02OF21115C0 SS+7d |  |  |  |  | 36.8d | 6d | MECHANICAL [403.2 h]; Cost |  |  | D02OF21113C0 | DT | C | 02 | OF | ME | 211 | 13 | BILL 5 | B05 | S2 | FF | R00 | ACF07 | 211 |  |  | FF | MEP |  |  |  |  |  |  |  |  |  |  |  |  |  |
| D02OF26003C0 |  | DT-02 ; Final Fix, Inst of Light fittings (Admit, Office) | 48d | 2012-06-26 | 2012-08-23 | D02OF09501C0, D02OF26017C0 SS+7d |  |  |  |  | 36.8d | 6d | ELECTRICAL [6626.4 h]; Cost |  |  | D02OF26003C0 | DT | C | 02 | OF | ME | 260 | 03 | BILL 5 | B05 | S2 | FF | R00 | ACF07 | 260 |  |  | FF | MEP |  |  |  |  |  |  |  |  |  |  |  |  |  |
| D02OF27030C0 |  | DT-02 ; Final Fix, Inst of ELV device (Detector/Speaker) (Admit, Office) | 54d | 2012-06-26 | 2012-08-30 | D02OF09501C0, D02OF27002C0 SS+7d |  |  |  |  | 30.8d | 0d | ELECTRICAL [2152.8 h]; Cost |  |  | D02OF27030C0 | DT | C | 02 | OF | ME | 270 | 30 | BILL 5 | B05 | S2 | FF | R00 | ACF07 | 270 |  |  | FF | MEP |  |  |  |  |  |  |  |  |  |  |  |  |  |
| D02OF22021C0 |  | DT-02 ; Final Fix, Terminate Sanitary Ware & Appliances (Admit, Office) | 48d | 2012-07-14 | 2012-09-10 | D02OF22011C0, D02OF22025C0 |  |  |  |  | 57.92d | 44.12d | PLUMBING [1917.6 h]; Cost |  |  | D02OF22021C0 | DT | C | 02 | OF | ME | 220 | 21 | BILL 5 | B05 | S2 | FF | R00 | ACF07 | 220 |  |  | FF | MEP |  |  |  |  |  |  |  |  |  |  |  |  |  |
| D02OF06101C0 |  | DT-02 ; Wood / caseworks (Admit, Office) | 48d | 2012-07-30 | 2012-09-26 | D02CO04415C0, D02OF09501C0, D02OF09901C0, D02CO04437C0, DAFWA00111M0, CAFWA00113M0, DAFMI22003R02 FS+184d, D02OF09601C0 |  |  |  |  | 13.8d | 0d | WOOD WORK/CASEWORK [476.29 no]; WOOD WORK/CASEWORK [3994 h]; Cost |  |  | D02OF06101C0 | DT | C | 02 | OF | WO | 061 | 01 | BILL 5 | B05 | S2 | WW | R00 | ACF06 | 061 |  |  |  |  |  |  |  |  |  | 332 | 960 |  |  |  |  |  |  |
| D02OF08107C0 |  | DT-02 ; Doors (Admit, Office) | 42d | 2012-07-30 | 2012-09-19 | D02OF08103C0, D02OF09901C0, D02OF09601C0 |  |  |  |  | 35.55d | 0d | ASSORTED DOORS [1100 h]; ASSORTED DOORS [110 no]; Cost |  |  | D02OF08107C0 | DT | C | 02 | OF | DO | 081 | 07 | BILL 5 | B05 | S2 | DR | R00 | ACF06 | 081 |  |  |  |  |  |  |  |  |  | 317 | 948 |  |  |  | 08 |  |  |
| D02OF09701C0 |  | DT-02 ; Wall finishes (ST, WD, WC) (Admit, Office) | 36d | 2012-07-30 | 2012-09-12 | D02OF26011C0, D02OF27020C0, D02OF09601C0 |  |  |  |  | 25.8d | 0d | ASSORTED WALL FINISH [1597 h]; ASSORTED WALL FINISH [1835 m2]; Cost |  |  | D02OF09701C0 | DT | C | 02 | OF | WF | 097 | 01 | BILL 5 | B05 | S2 | 01 | R00 | ACF06 | 097 |  |  |  |  |  |  |  |  |  | 105 | 1002 |  |  |  |  |  |  |
| D02OF09903C0 |  | DT-02 ; Wall Final Paint (Admit, Office) | 36d | 2012-07-30 | 2012-09-12 | D02OF09901C0, D02OF09905C0 |  |  |  |  | 67.8d | 36d | WALL PAINT [774 h]; WALL PAINT [966 m2]; Cost |  |  | D02OF09903C0 | DT | C | 02 | OF | PA | 099 | 03 | BILL 5 | B05 | S2 | 02 | R00 | ACF06 | 099 |  |  |  |  |  |  |  |  |  | 329 | 957 |  |  |  |  |  |  |
| D02OF01006C0 |  | DT-02 ; 2nd, Ceiling Inspection by Consultants (Admit, Office) | 6d | 2012-08-30 | 2012-09-06 | D02OF21115C0, D02OF23009C0, D02OF23015C0, D02OF27002C0, D02OF09501C0, D02OF21113C0, D02OF22029C0, D02OF23019C0, D02OF26003C0, D02OF26017C0, D02OF27030C0, D02OF26015C0 |  |  |  |  | 30.8d | 17d | Labor General [1.2 h]; Cost |  |  | D02OF01006C0 | DT | C | 02 | OF | ME | 010 | 06 | BILL 5 | B05 | S2 | CI | R00 | ACF07 | 010 |  |  | 2n | MEP |  |  |  |  |  |  |  |  |  |  |  |  |  |
| D02OF11001C0 |  | DT-02 ; Wall Protection (WP, CG, WG, FCG) (Admit, Office) | 24d | 2012-09-12 | 2012-10-10 | D02OF09701C0, D02OF09903C0 SS |  |  |  |  | 43.8d | 30d | FF&E [2211 h]; Cost |  |  | D02OF11001C0 | DT | C | 02 | OF | WF | 110 | 01 | BILL 5 | B05 | S2 | 03 | R00 | ACF08 | b |  |  |  |  |  |  |  |  |  | 326 | 1001 |  |  |  |  |  |  |
| D02OF08709C0 |  | DT-02 ; Ironmongery (Admit, Office) | 26.25d | 2012-09-19 | 2012-10-20 | D02OF08107C0 |  |  |  |  | 35.55d | 21.75d | IRONMONGERY [520 h]; IRONMONGERY [52 no]; Cost |  |  | D02OF08709C0 | DT | C | 02 | OF | DO | 087 | 09 | BILL 5 | B05 | S2 | IM | R00 | ACF06 | 087 |  |  |  |  |  |  |  |  |  | 322 | 951 |  |  |  | 08 |  |  |
| D02OF09503C0 |  | DT-02 ; Ceiling closure - ACT/Gypsum (Admit, Office) | 18d | 2012-09-26 | 2012-10-17 | D02OF01006C0, D02OF21115C0, D02OF26005C0, D02OF27001C0, D02OF27002C0, DAFOA09505C1 FF, D02OF06101C0, D02OF09701C0, D02OF23021C0, D02OF26053C0, D02OF26007C0 |  |  |  |  | 13.8d | 0d | ASSORTED CEILING FINISH [898.51 h]; CEILING GYPSUM [124.44 h]; ASSORTED CEILING FINISH [1461 m2]; CEILING GYPSUM [380 m2]; Cost |  |  | D02OF09503C0 | DT | C | 02 | OF | CE | 095 | 03 | BILL 5 | B05 | S2 | 02 | R00 | ACF06 | 095 |  |  |  |  |  |  |  |  |  | 324 | 953 |  |  |  |  |  | R3 |
| D02OF09907C0 |  | DT-02 ; Ceiling Final paint (Admit, Office) | 12d | 2012-10-17 | 2012-11-03 | D02OF09601C0, D02OF09905C0, D02OF09503C0 |  |  |  |  | 25.8d | 12d | ASSORTED CEILING FINISH [87 h]; Cost |  |  | D02OF09907C0 | DT | C | 02 | OF | PA | 099 | 07 | BILL 5 | B05 | S2 | 02 | R00 | ACF06 | 099 |  |  |  |  |  |  |  |  |  | 331 | 959 |  |  |  |  |  |  |
| D02OF11003C0 |  | DT-02 ; FF & E (Admit, Office) | 12d | 2012-10-17 | 2012-11-03 | D02OF09601C0, D02OF09503C0 |  |  |  |  | 25.8d | 12d | FF&E [59 h]; FF&E [31.13 no]; Cost |  |  | D02OF11003C0 | DT | C | 02 | OF | WO | 110 | 03 | BILL 5 | B05 | S2 | 04 | R00 | ACF08 | a |  |  |  |  |  |  |  |  |  | 333 | 961 |  |  |  |  |  |  |
| D02OF22027C0 |  | DT-02 ; Final Fix, Inst of All drain (Admit, Office) | 12d | 2012-10-17 | 2012-11-03 | D02OF09305C0, D02OF09503C0 |  |  |  |  | 13.8d | 0d | PLUMBING [1173.6 h]; Cost |  |  | D02OF22027C0 | DT | C | 02 | OF | ME | 220 | 27 | BILL 5 | B05 | S2 | FF | R00 | ACF07 | 220 |  |  | FF | MEP |  |  |  |  |  |  |  |  |  |  |  |  |  |
| D02OF26019C0 |  | DT-02 ; Final Fix, Inst of Switch/Sockets (Admit, Office) | 12d | 2012-10-17 | 2012-11-03 | D02OF09901C0, D02OF09503C0 |  |  |  |  | 13.8d | 0d | ELECTRICAL [610.8 h]; Cost |  |  | D02OF26019C0 | DT | C | 02 | OF | ME | 260 | 19 | BILL 5 | B05 | S2 | FF | R00 | ACF07 | 260 |  |  | FF | MEP |  |  |  |  |  |  |  |  |  |  |  |  |  |

| ID | WBS | Activity | Duration | Start | Finish | Predecessors | Complete | Remaining | Planned start | Planned finish | Total float | Free float | Resources | Cost | Actual cost | change id | CCAD BUILDING(SET) | CCAD PHASE(SET) | CCAD FLOOR(SET) | CCAD ZONE(SET) | CCAD WORK(SET) | CCAD SECTION(SET) | CCAD SERIAL No.(SET) | CCAD CBS(SET) | CCAD BILL(SET) | CCAD HANDOVER(SET) | CCAD TAG(SET) | CCAD REV(SET) | CCADACF (SET) | CCAD SSCF | Change Order # | NEW ACTIVITY ID | RENZ % COMPLETE | Claimed This Month | P_811 | P_711 | U% | CCAD CSA | Act Selector % | user_number8 | user_integer1 | user_integer2 | user_number7 | July2011 Target% Complete | CCAD SUB ZONE MEP(SET) | CCAD MEQ | CCAD DIVISION(SET) | IDDD |
| --- | --- | --- | --- | --- | --- | --- | --- | --- | --- | --- | --- | --- | --- | --- | --- | --- | --- | --- | --- | --- | --- | --- | --- | --- | --- | --- | --- | --- | --- | --- | --- | --- | --- | --- | --- | --- | --- | --- | --- | --- | --- | --- | --- | --- | --- | --- | --- | --- |
|  | 10 | **Precommissioning Tesing & snagging (Pat Rm-Pre Admit, Office, ST LKR & TLT)** |  | 2012-11-03 | 2012-12-18 |  |  |  |  |  |  |  |  |  |  |  |  |  |  |  |  |  |  |  |  |  |  |  |  |  |  |  |  |  |  |  |  |  |  |  |  |  |  |  |  |  |  |  |
| D02TS01807C0 |  | DT-02 ; MEP de-snag, FIREM sign-off | 12d | 2012-11-03 | 2012-11-18 | D02OF22025C0, D02OF22027C0, D02OF26015C0, D02OF22021C0, D02OF21113C0, D02OF23019C0, D02OF22029C0, D02OF26017C0, D02OF26003C0, D02OF27030C0, D02OF26019C0 |  |  |  |  | 13.8d | 0d | TESTING & COMMISSIONING [1275 h]; Cost |  |  | D02TS01801C0 | DT | C | 02 | TS | SC | 018 | 01 | BILL 5 | B05 | S2 | 01 | R00 | ACF07 | 018 |  |  |  |  |  |  |  |  |  |  |  |  |  |  |  |  |  |  |
| D02TS01812C0 |  | DT-02 ; Touch-up & Clean / JV inspection /CIR /De-snag | 18d | 2012-11-18 | 2012-12-10 | D02OF06101C0, D02OF08709C0, D02OF09305C0, D02OF09601C0, D02OF09701C0, D02OF09903C0, D02OF09907C0, D02OF11001C0, D02OF11003C0, D02TS01807C0, D02OF05501C0, D02OF09503C0 |  |  |  |  | 13.8d | 0d | TESTING & COMMISSIONING [213 h]; Cost |  |  | D02TS01802C0 | DT | C | 02 | TS | SC | 018 | 02 | BILL 5 | B05 | S2 | 02 | R00 | ACF07 | 018 |  |  |  |  |  |  |  |  |  |  |  |  |  |  |  |  |  |  |
| D02TS01817C0 |  | DT-02 ; Consultant's final de-snag inspection | 7d | 2012-12-10 | 2012-12-18 | D02TS01812C0 |  |  |  |  | 13.8d | 3.52d | Labor General [1 h]; Cost |  |  | D02TS01803C0 | DT | C | 02 | TS | SC | 018 | 03 | BILL 5 | B05 | S2 | 03 | R00 | ACF07 | 018 |  |  |  |  |  |  |  |  |  |  |  |  |  |  |  |  |  |  |
|  | 07 | **TR Room** |  | 2011-04-10 | 2012-07-17 |  |  |  |  |  |  |  |  |  |  |  |  |  |  |  |  |  |  |  |  |  |  |  |  |  |  |  |  |  |  |  |  |  |  |  |  |  |  |  |  |  |  |  |
| D02TR09201C0 |  | DT-02 ; Metal Studs (TR RM) | 60d | 2011-04-10 A | 2011-11-09 | D02PA09201C0 | 90% | 6d | 2011-06-16 | 2011-08-25 | 11.8d | 0d | PARTITIONS [722 h]; PARTITIONS - Metal Studs [124 m]; Cost |  |  | D02TR09201C0 | DT | C | 02 | TR | PT | 092 | 01 | BILL 5 | B05 | S2 | 1F | R00 | ACF06 | 092 | 313 | 885 | 50 | 4570.4 | 90 | 67 | 90 | GP | PMS |  |  |  |  |  |  |  |  |  |
| D02TR09203C0 |  | DT-02 ; Partitions 1st face (TR RM) | 60d | 2011-05-15 A | 2011-12-01 | D02TR09201C0 SS+12d | 59% | 24.6d | 2011-06-15 | 2011-08-25 | 41.2d | 0d | PARTITIONS [124 m]; PARTITIONS [564 h]; Cost |  |  | D02TR09203C0 | DT | C | 02 | TR | PT | 092 | 03 | BILL 5 | B05 | S2 | 2F | R00 | ACF06 | 092 | 314 | 886 | 10 | 7038.42 | 50 | 27 |  | GP | P1F | 0 | 0 | 0 | 0 |  |  |  |  |  |
| D02TR26026C0 |  | DT-02 ; 2nd Fix, Conduit (TR RM) | 60d | 2011-06-13 A | 2011-12-24 | D02TR09201C0 SS+6d | 30% | 42d | 2011-06-13 | 2011-08-23 | 11.8d | 0d | ELECTRICAL [824.4 h]; Cost [42423.2 AED] | 42,423.24 | 12,726.97 | D02TR26026C0 | DT | C | 02 | TR | ME | 260 | 26 | BILL 5 | B05 | S2 | 2F | R00 | ACF07 | 260 |  |  |  | 29991.97 |  |  |  | MEP |  |  |  |  |  | 65 | 2n |  |  |  |
| D02TR26005C0 |  | DT-02 ; 2nd Fix, Wiring for Power/Lighting/Emergency (TR RM) | 36d | 2011-06-15 A | 2012-03-03 | D02TR26026C0, D02TR09205C0 | 20% | 28.8d | 2011-08-22 | 2011-10-05 | 43d | 31.2d | ELECTRICAL [436.8 h]; Cost [21894.9 AED] | 21,894.91 | 4,378.98 | D02TR26005C0 | DT | C | 02 | TR | ME | 260 | 05 | BILL 5 | B05 | S2 | 2F | R00 | ACF07 | 260 |  |  |  | 5158.53 |  |  |  | MEP |  |  |  |  |  | 25 | 2n |  |  |  |
| D02TR26027C0 |  | DT-02 ; 2nd Fix, Wiring / Cabling (TR RM) | 60d | 2011-06-15 A | 2012-01-29 | D02TR09203C0 | 20% | 48d | 2011-08-22 | 2011-11-02 | 71.2d | 59.4d | ELECTRICAL [436.8 h]; Cost [21894.9 AED] | 21,894.91 | 4,378.98 | D02TR26027C0 | DT | C | 02 | TR | ME | 260 | 27 | BILL 5 | B05 | S2 | 2F | R00 | ACF07 | 260 | 417 | 1318 |  | 5158.53 |  |  |  | MEP |  |  |  |  |  | 25 | 2n |  |  |  |
| D02TR26009C0 |  | DT-02 ; 2nd Fix, Inst of Equipment (DB, TR, SG,BUS) (TR RM) | 60d | 2011-07-06 A | 2012-03-22 | D02TR09205C0 | 25% | 45d | 2011-10-13 | 2011-12-28 | 26.8d | 15d | ELECTRICAL [14310 h]; Cost [3256347 AED] | 3,256,347.19 | 814,086.8 | D02TR26009C0 | DT | C | 02 | TR | ME | 260 | 09 | BILL 5 | B05 | S2 | 2F | R00 | ACF04 | 260 |  |  |  |  | 20 | 10 |  | MEP |  | 0 | 0 | 0 | 0 |  | 2n | E |  |  |
| D02TR23013C0 |  | DT-02 ; 2nd Fix, Insulation of CHW pipe & Duct (TR RM) | 60d | 2011-07-10 A | 2012-01-09 | D02TR23009C0, D02TR23011C0 | 65% | 21d | 2011-10-04 | 2011-12-19 | 76.3d | 64.5d | MECHANICAL [5311.2 h]; Cost [286617 AED] | 286,617.06 | 186,301.09 | D02TR23013C0 | DT | C | 02 | TR | ME | 230 | 13 | BILL 5 | B05 | S2 | 2F | R00 | ACF07 | 230 |  |  |  |  |  |  |  | MEP |  | 0 | 0 | 0 | 0 | 60 | 2n |  |  |  |
| D02TR23009C0 |  | DT-02 ; 2nd Fix, Inst of VAV'S CHW connection (TR RM) | 30d | 2011-09-05 A | 2011-12-13 | D02TR09201C0 | 10% | 27d | 2012-02-23 | 2012-03-29 | 77.8d | 1.5d | MECHANICAL [1684.8 h]; Cost [91006.1 AED] | 91,006.06 | 9,100.61 | D02TR23009C0 | DT | C | 02 | TR | ME | 230 | 09 | BILL 5 | B05 | S2 | 2F | R00 | ACF07 | 230 |  |  |  |  |  |  |  | MEP |  |  |  |  |  | 25 | 2n |  |  |  |
| D02TR23011C0 |  | DT-02 ; 2nd Fix, Inst of VCD's/FD's (TR RM) | 30d | 2011-09-05 A | 2011-12-14 | D02TR09201C0 | 5% | 28.5d | 2012-02-23 | 2012-03-29 | 76.3d | 0d | MECHANICAL [4312.8 h]; Cost [232964 AED] | 232,964.23 | 11,648.21 | D02TR23011C0 | DT | C | 02 | TR | ME | 230 | 11 | BILL 5 | B05 | S2 | 2F | R00 | ACF07 | 230 |  |  |  |  |  |  |  | MEP |  |  |  |  |  | 25 | 2n |  |  |  |
| D02TR08101C0 |  | DT-02 ; Door Frames (TR RM) | 18d | 2011-11-27 | 2011-12-18 | D02TR09201C0, GNHE08101C0 FS+93d |  |  |  |  | 46d | 34.2d | ASSORTED DOORS [68 h]; Cost |  |  | D02TR08101C0 | DT | C | 02 | TR | DO | 081 | 01 | BILL 5 | B05 | S2 | DF | R00 | ACF06 | 081 | 316 | 20001090 |  |  |  |  |  |  |  |  |  |  |  |  |  |  | 08 |  |
| D02TR01005C0 |  | DT-02 ; 2nd, Wall Inspection by Consultant (TR RM) | 12d | 2011-12-24 | 2012-01-08 | D02TR26026C0 |  |  |  |  | 11.8d | 0d | Labor General [1.2 h]; Cost |  |  | D02TR01005C0 | DT | C | 02 | TR | ME | 010 | 05 | BILL 5 | B05 | S2 | WI | R00 | ACF07 | 010 |  |  |  |  |  |  |  | MEP |  |  |  |  |  | 25 | 2n |  |  |  |
| D02TR09205C0 |  | DT-02 ; Partitions Closing (TR RM) | 18d | 2012-01-08 | 2012-01-29 | D02TR01005C0, D02TR09201C0, D02TR09203C0, DAFOA09206C1 FF, D02TR08101C0 FF |  |  |  |  | 11.8d | 0d | PARTITIONS [124 m]; PARTITIONS [723 h]; Cost |  |  | D02TR09205C0 | DT | C | 02 | TR | PT | 092 | 05 | BILL 5 | B05 | S2 | FF | R00 | ACF06 | 092 | 315 | 887 |  |  |  |  |  | GP | P2F |  |  |  |  |  |  |  |  |  |
| D02TR09901C0 |  | DT-02 ; Wall Prime & 1st coat (TR RM) | 12d | 2012-01-29 | 2012-02-13 | D02TR09205C0 |  |  |  |  | 11.8d | 0d | WALL PAINT [198 h]; WALL PAINT [245 m2]; Cost |  |  | D02TR09901C0 | DT | C | 02 | TR | PA | 099 | 01 | BILL 5 | B05 | S2 | 01 | R00 | ACF06 | 099 | 360 | 20001110 |  |  |  |  |  |  |  |  |  |  |  |  |  |  |  |  |
| D02TR26007C0 |  | DT-02 ; 2nd Fix, Cable Pulling (TR RM) | 30d | 2012-01-29 | 2012-03-05 | D02TR09203C0, D02TR09205C0 |  |  |  |  | 29.8d | 18d | ELECTRICAL [6634.8 h]; Cost |  |  | D02TR26007C0 | DT | C | 02 | TR | ME | 260 | 07 | BILL 5 | B05 | S2 | 2F | R00 | ACF07 | 260 |  |  |  |  |  |  |  | MEP |  |  |  |  |  |  | 2n |  |  |  |
| D02TR27002C0 |  | DT-02 ; 2nd Fix, Dressing of ELV panels (TR RM) | 30d | 2012-01-29 | 2012-03-05 | D02TR09205C0, D02TR27020C0 SS |  |  |  |  | 11.8d | 0d | ELECTRICAL [333.6 h]; Cost |  |  | D02TR27002C0 | DT | C | 02 | TR | ME | 270 | 02 | BILL 5 | B05 | S2 | 2F | R00 | ACF07 | 270 |  |  |  |  |  |  |  | MEP |  |  |  |  |  |  | 2n |  |  |  |
| D02TR27020C0 |  | DT-02 ; 2nd Fix, Inst of ELV Equipment (Panels) (TR RM) | 30d | 2012-01-29 | 2012-03-05 | D02TR09205C0 |  |  |  |  | 11.8d | 0d | ELECTRICAL [1723.2 h]; Cost |  |  | D02TR27020C0 | DT | C | 02 | TR | ME | 270 | 20 | BILL 5 | B05 | S2 | 2F | R00 | ACF04 | 270 |  |  |  |  |  |  |  | MEP |  |  |  |  |  |  | 2n | E |  |  |
| D02TR09501C0 |  | DT-02 ; Ceiling Grid and Service Tile (TR RM) | 18d | 2012-02-13 | 2012-03-05 | D02TR09205C0, D02TR09901C0 |  |  |  |  | 11.8d | 0d | CEILING GRID FOR GYPSUM [443.17 h]; CEILING GRID FOR GYPSUM [37.95 m2]; Cost |  |  | D02TR09501C0 | DT | C | 02 | TR | CE | 095 | 01 | BILL 5 | B05 | S2 | 01 | R00 | ACF06 | 095 | 336 | 1327 |  |  |  |  |  |  |  |  |  |  |  |  |  |  |  | 1 |
| D02TR09903C0 |  | DT-02 ; Wall - Final Paint (TR RM) | 12d | 2012-02-13 | 2012-02-27 | D02TR09901C0 |  |  |  |  | 95.8d | 84d | WALL PAINT [106 h]; WALL PAINT [132 m2]; Cost |  |  | D02TR09903C0 | DT | C | 02 | TR | PA | 099 | 03 | BILL 5 | B05 | S2 | 02 | R00 | ACF06 | 099 | 361 | 1312 |  |  |  |  |  |  |  |  |  |  |  |  |  |  |  |  |
| D02TR09601C0 |  | DT-02 ; Floor Finishes (TR RM) | 18d | 2012-03-05 | 2012-03-26 | D02TR09501C0 |  |  |  |  | 17.8d | 0d | ASSORTED FLOOR FINISH [1744 h]; ASSORTED FLOOR FINISH [968 m2]; Cost |  |  | D02TR09601C0 | DT | C | 02 | TR | FF | 096 | 01 | BILL 5 | B05 | S2 | 01 | R00 | ACF06 | FF | 359 | 20001120 |  |  |  |  |  |  |  |  |  |  |  |  |  |  |  |  |
| D02TR09905C0 |  | DT-02 ; Ceiling Prime & 1st coat (TR RM) | 18d | 2012-03-05 | 2012-03-26 | D02TR09501C0 |  |  |  |  | 59.8d | 30d | ASSORTED CEILING FINISH [17 h]; Cost |  |  | D02TR09905C0 | DT | C | 02 | TR | PA | 099 | 05 | BILL 5 | B05 | S2 | 01 | R00 | ACF06 | 099 | 362 | 1313 |  |  |  |  |  |  |  |  |  |  |  |  |  |  |  |  |
| D02TR23003C0 |  | DT-02 ; Final Fix, Inst of Grilles & Diffusers (TR RM) | 18d | 2012-03-05 | 2012-03-26 | D02TR09501C0 |  |  |  |  | 11.8d | 0d | MECHANICAL [2560.8 h]; Cost |  |  | D02TR23003C0 | DT | C | 02 | TR | ME | 230 | 03 | BILL 5 | B05 | S2 | FF | R00 | ACF07 | 230 |  |  |  |  |  |  |  | MEP |  |  |  |  |  |  | FF |  |  |  |
| D02TR23023C0 |  | DT-02 ; 2nd Fix, Flexible ducts (TR RM) | 24d | 2012-03-05 | 2012-04-02 | D02TR09205C0, D02TR09501C0 |  |  |  |  | 17.8d | 6d | MECHANICAL [274.8 h]; Cost |  |  | D02TR23023C0 | DT | C | 02 | TR | ME | 230 | 23 | BILL 5 | B05 | S2 | 2F | R00 | ACF07 | 230 | 412 | 20001140 |  |  |  |  |  | MEP |  |  |  |  |  |  | 2n |  |  |  |
| D02TR23074C0 |  | DT-02 ; Final Fix, Grilles, panels & diffusers (TR RM) | 18d | 2012-03-05 | 2012-03-26 | D02TR09501C0 |  |  |  |  | 11.8d | 0d | MECHANICAL [2560.8 h]; Cost |  |  | D02TR23074C0 | DT | C | 02 | TR | ME | 230 | 74 | BILL 5 | B05 | S2 | FF | R00 | ACF07 | 230 | 419 | 20001160 |  |  |  |  |  | MEP |  |  |  |  |  |  | FF |  |  |  |
| D02TR26013C0 |  | DT-02 ; Final Fix, Termination & Gladding of Cables (TR RM) | 18d | 2012-03-05 | 2012-03-26 | D02TR26009C0 SS, D02TR09501C0 |  |  |  |  | 11.8d | 0d | ELECTRICAL [368.4 h]; Cost |  |  | D02TR26013C0 | DT | C | 02 | TR | ME | 260 | 13 | BILL 5 | B05 | S2 | FF | R00 | ACF07 | 260 |  |  |  |  |  |  |  | MEP |  |  |  |  |  |  | FF |  |  |  |
| D02TR26015C0 |  | DT-02 ; Final Fix, Inst of Ceiling rose (TR RM) | 18d | 2012-03-05 | 2012-03-26 | D02TR09501C0 |  |  |  |  | 11.8d | 0d | ELECTRICAL [67.2 h]; Cost |  |  | D02TR26015C0 | DT | C | 02 | TR | ME | 260 | 15 | BILL 5 | B05 | S2 | FF | R00 | ACF07 | 260 |  |  |  |  |  |  |  | MEP |  |  |  |  |  |  | FF |  |  |  |
| D02TR26019C0 |  | DT-02 ; Final Fix, Inst of Light fittings (TR RM) | 18d | 2012-03-05 | 2012-03-26 | D02TR09501C0 |  |  |  |  | 11.8d | 0d | ELECTRICAL [6626.4 h]; Cost |  |  | D02TR26019C0 | DT | C | 02 | TR | ME | 260 | 19 | BILL 5 | B05 | S2 | FF | R00 | ACF07 | 260 |  |  |  |  |  |  |  | MEP |  |  |  |  |  |  | FF |  |  |  |
| D02TR26076C0 |  | DT-02 ; Final Fix, Lighting fittings (TR RM) | 18d | 2012-03-05 | 2012-03-26 | D02TR09501C0 |  |  |  |  | 11.8d | 0d | ELECTRICAL [6626.4 h]; Cost |  |  | D02TR26076C0 | DT | C | 02 | TR | ME | 260 | 76 | BILL 5 | B05 | S2 | FF | R00 | ACF07 | 260 | 420 | 20001170 |  |  |  |  |  | MEP |  |  |  |  |  |  | FF |  |  |  |
| D02TR27030C0 |  | DT-02 ; Final Fix, Inst of ELV device (Detector/Speaker) (TR RM) | 18d | 2012-03-05 | 2012-03-26 | D02TR27002C0, D02TR09501C0 |  |  |  |  | 11.8d | 0d | ELECTRICAL [2152.8 h]; Cost |  |  | D02TR27030C0 | DT | C | 02 | TR | ME | 270 | 30 | BILL 5 | B05 | S2 | FF | R00 | ACF07 | 270 |  |  |  |  |  |  |  | MEP |  |  |  |  |  |  | FF |  |  |  |
| D02TR21115C0 |  | DT-02 ; 2nd Fix, Gaseous Fire Suppression (TR RM) | 18d | 2012-03-12 | 2012-04-02 | D02TR09501C0, D02TR09601C0 SS+6d |  |  |  |  | 17.8d | 6d | MECHANICAL [12560.4 h]; Cost |  |  | D02TR21115C0 | DT | C | 02 | TR | ME | 211 | 15 | BILL 5 | B05 | S2 | 2F | R00 | ACF07 | 211 | 411 | 20001130 |  |  |  |  |  | MEP |  |  |  |  |  |  | 2n |  |  |  |
| D02TR01006C0 |  | DT-02 ; 2nd, Ceiling Inspection by Consultants (TR RM) | 12d | 2012-03-26 | 2012-04-09 | D02TR23009C0, D02TR23011C0, D02TR23013C0, D02TR26007C0, D02TR09501C0, D02TR23003C0, D02TR23074C0, D02TR26015C0, D02TR26019C0, D02TR26076C0, D02TR27030C0, D02TR26013C0 |  |  |  |  | 11.8d | 0d | Labor General [1.2 h]; Cost |  |  | D02TR01006C0 | DT | C | 02 | TR | ME | 010 | 06 | BILL 5 | B05 | S2 | CI | R00 | ACF07 | 010 |  |  |  |  |  |  |  | MEP |  |  |  |  |  |  | 2n |  |  |  |
| D02TR08105C0 |  | DT-02 ; Doors (TR RM) | 19d | 2012-03-26 | 2012-04-17 | D02TR08101C0, D02TR09901C0, D02TR09601C0 |  |  |  |  | 36.8d | 0d | ASSORTED DOORS [110 h]; ASSORTED DOORS [11 no]; Cost |  |  | D02TR08105C0 | DT | C | 02 | TR | DO | 081 | 05 | BILL 5 | B05 | S2 | DR | R00 | ACF06 | 081 | 317 | 1325 |  |  |  |  |  |  |  |  |  |  |  |  |  |  | 08 |  |
| D02TR09503C0 |  | DT-02 ; Ceiling closure (TR RM) | 18d | 2012-04-09 | 2012-04-30 | D02TR01006C0, D02TR21115C0, D02TR26005C0, D02TR26007C0, D02TR26026C0, D02TR26027C0, D02TR26009C0, D02TR23023C0 |  |  |  |  | 11.8d | 0d | ASSORTED CEILING FINISH [89.79 h]; CEILING GYPSUM [12.51 h]; ASSORTED CEILING FINISH [146 m2]; CEILING GYPSUM [38 m2]; Cost |  |  | D02TR09503C0 | DT | C | 02 | TR | CE | 095 | 03 | BILL 5 | B05 | S2 | 02 | R00 | ACF06 | 095 | 337 | 20001080 |  |  |  |  |  |  |  |  |  |  |  |  |  |  |  |  |
| D02TR08709C0 |  | DT-02 ; Ironmongery (TR RM) | 16d | 2012-04-17 | 2012-05-06 | D02TR08105C0 |  |  |  |  | 36.8d | 25d | IRONMONGERY [50 h]; IRONMONGERY [5 no]; Cost |  |  | D02TR08709C0 | DT | C | 02 | TR | DO | 087 | 09 | BILL 5 | B05 | S2 | IM | R00 | ACF06 | 087 | 322 | 20001100 |  |  |  |  |  |  |  |  |  |  |  |  |  |  | 08 |  |
| D02TR09907C0 |  | DT-02 ; Ceiling - Final paint (TR RM) | 12d | 2012-04-30 | 2012-05-14 | D02TR09905C0, D02TR09503C0 |  |  |  |  | 29.8d | 18d | ASSORTED CEILING FINISH [9 h]; Cost |  |  | D02TR09907C0 | DT | C | 02 | TR | PA | 099 | 07 | BILL 5 | B05 | S2 | 02 | R00 | ACF06 | 099 | 363 | 1314 |  |  |  |  |  |  |  |  |  |  |  |  |  |  |  |  |
| D02TR26017C0 |  | DT-02 ; Final Fix, Inst of Switch/Sockets (TR RM) | 12d | 2012-04-30 | 2012-05-14 | D02TR09901C0, D02TR09503C0 |  |  |  |  | 11.8d | 0d | ELECTRICAL [610.8 h]; Cost |  |  | D02TR26017C0 | DT | C | 02 | TR | ME | 260 | 17 | BILL 5 | B05 | S2 | FF | R00 | ACF07 | 260 |  |  |  |  |  |  |  | MEP |  |  |  |  |  |  | FF |  |  |  |
| D02TR01802C0 |  | DT-02 ; MEP de-snag, FIREM sign-off | 18d | 2012-05-14 | 2012-06-04 | D02TR26017C0, D02TR23074C0, D02TR23003C0, D02TR26076C0, D02TR26013C0, D02TR26015C0, D02TR26019C0, D02TR27030C0 |  |  |  |  | 11.8d | 0d | TESTING & COMMISSIONING [510 h]; Cost |  |  | CP3TR01851C0 | DT | C | 02 | TR | SC | 018 | 53 | BILL 5 | B05 | S2 | 01 | R00 | ACF07 | 018 | 396 |  |  |  |  |  |  |  |  |  |  |  |  |  |  |  |  |  |
| D02TR01801C0 |  | DT-02 ; Touch-up & Clean / JV inspection /CIR /De-snag | 24d | 2012-06-04 | 2012-07-03 | D02TR01802C0, D02TR08709C0, D02TR09601C0, D02TR09903C0, D02TR09907C0, D02TR09503C0 |  |  |  |  | 11.8d | 0d | TESTING & COMMISSIONING [85 h]; Cost |  |  | D02TR01851C0 | DT | C | 02 | TR | SC | 018 | 51 | BILL 5 | B05 | S2 | 02 | R00 | ACF07 | 018 | 396 |  |  |  |  |  |  |  |  |  |  |  |  |  |  |  |  |  |
| D02TR01803C0 |  | DT-02 ; Consultant's final de-snag inspection | 12d | 2012-07-03 | 2012-07-17 | D02TR01801C0 |  |  |  |  | 11.8d | 0d | Labor General [1 h]; Cost |  |  | CP3TS01803C0 | DT | C | 02 | TR | SC | 018 | 03 | BILL 5 | B05 | S1 | 03 | R00 | ACF07 | 018 |  |  |  |  |  |  |  |  |  |  |  |  |  |  |  |  |  |  |

| ID | WBS | Activity | Type | Duration | Start | Finish | Predecessors | Complete | Remaining | Planned start | Planned finish | Total float | Free float | Resources | change id | RENZ % COMPLETE | CCAD BUILDING(SET) | CCAD PHASE(SET) | CCAD FLOOR(SET) | CCAD ZONE(SET) | CCAD WORK(SET) | CCAD SECTION(SET) | CCAD SERIAL No.(SET) | CCAD CBS(SET) | CCAD BILL(SET) | CCAD HANDOVER(SET) | CCAD TAG(SET) | CCAD REV(SET) | CCADACF (SET) | CCAD SSCF | Actual Cost | Phase | Area/ Department | Grids | Are | Weight & Nos | Process | Levels | CCAD CSA | Claimed This Month | N_% | P_811 | P_711 | user_number8 | user_integer1 | user_integer2 | user_number7 |
| --- | --- | --- | --- | --- | --- | --- | --- | --- | --- | --- | --- | --- | --- | --- | --- | --- | --- | --- | --- | --- | --- | --- | --- | --- | --- | --- | --- | --- | --- | --- | --- | --- | --- | --- | --- | --- | --- | --- | --- | --- | --- | --- | --- | --- | --- | --- | --- |
|  | 03 | **Level 3** |  |  | 2010-10-11 | 2013-01-13 |  |  |  |  |  |  |  |  |  |  |  |  |  |  |  |  |  |  |  |  |  |  |  |  |  |  |  |  |  |  |  |  |  |  |  |  |  |  |  |  |  |
|  | 01 | **Structure & Envelopment** |  |  | 2010-10-11 | 2012-08-15 |  |  |  |  |  |  |  |  |  |  |  |  |  |  |  |  |  |  |  |  |  |  |  |  |  |  |  |  |  |  |  |  |  |  |  |  |  |  |  |  |  |
| D03SA03301C0 |  | DT-03 ; Corewall concrete (Zone SA) |  | 4d | 2010-10-11 A | 2010-10-14 A | D02SA03301C0 | 100% |  | 2010-09-06 | 2010-09-12 |  |  | CONCRETE [11016 h]; CONCRETE [277 m3]; Cost | D03SA03301C0 | 100 | DT | C | 03 | SA | CT | 033 | 01 | BILL 5 | B05 | S2 | 04 | R00 | ACF03 | 033 |  |  |  |  |  |  |  |  |  |  |  |  |  |  |  |  |  |
| D03SB03303C0 |  | DT-03 ; Corewall concrete (Zone SB) |  | 4d | 2010-10-20 A | 2010-10-24 A | D02SB03303C0 | 100% |  | 2010-09-06 | 2010-09-12 |  |  | CONCRETE [11056 h]; CONCRETE [278 m3]; Cost | D03SB03303C0 | 100 | DT | C | 03 | SB | CT | 033 | 03 | BILL 5 | B05 | S2 | 04 | R00 | ACF03 | 033 |  |  |  |  |  |  |  |  |  |  |  |  |  |  |  |  |  |
| D03S105101C0 |  | DT-03 ; Erection of Structural Steel of 3rd FLR (Zone S1) |  | 5d | 2010-11-14 A | 2011-01-24 A | D02S105103C0 | 100% |  | 2010-11-08 | 2010-11-14 |  |  | STRUCTURAL STEEL [12540 h]; STRUCTURAL STEEL [491 T(Fe)]; Cost | D03S105101C0 | 100 | DT | C | 03 | S1 | ST | 051 | 01 | BILL 5 | B05 | S2 | 01 | R00 | ACF03 | 051 | 3968618 | Z2 | DT | P03 | O | A3 | EREC | 1FLR | ST |  |  |  |  |  |  |  |  |
| D03S205101C0 |  | DT-03 ; Erection of Structural Steel of 3rd FLR (Zone S2) |  | 9.26d | 2010-11-24 A | 2011-02-21 A | D02S205103C0 | 100% |  | 2011-01-15 | 2011-01-25 |  |  | STRUCTURAL STEEL [11519 h]; STRUCTURAL STEEL [451 T(Fe)]; Cost | D03S205101C0 | 100 | DT | C | 03 | S2 | ST | 051 | 01 | BILL 5 | B05 | S2 | 01 | R00 | ACF03 | 051 | 4928536 | Z2 | DT | P03 | O | A3 | EREC | 1FLR | ST |  |  |  |  |  |  |  |  |
| D03S105103C0 |  | DT-03 ; Alignment & welding of 3rd FLR (Zone S1) |  | 3d | 2010-12-04 A | 2011-01-26 A | D03S105101C0 SS+4d | 100% |  | 2011-01-02 | 2011-01-04 |  |  | STRUCTURAL STEEL [1058 h]; Cost | D03S105103C0 | 100 | DT | C | 03 | S1 | ST | 051 | 03 | BILL 5 | B05 | S2 | 02 | R00 | ACF03 | 051 | 440957.5 | Z2 | DT | P03 | O | A3 | EREC | 1FLR | ST |  |  |  |  |  |  |  |  |
| D03S205103C0 |  | DT-03 ; Alignment & welding of 3rd FLR (Zone S2) |  | 5d | 2010-12-09 A | 2011-03-06 A | D03S205101C0 | 100% |  | 2011-01-26 | 2011-02-01 |  |  | STRUCTURAL STEEL [1314 h]; Cost | D03S205103C0 | 100 | DT | C | 03 | S2 | ST | 051 | 03 | BILL 5 | B05 | S2 | 02 | R00 | ACF03 | 051 |  | Z2 | DT | P03 | O | A3 | EREC | 1FLR | ST |  |  |  |  |  |  |  |  |
| D03S305101C0 |  | DT-03 ; Erection of Structural Steel of 3rd FLR (Zone S3) |  | 9.25d | 2010-12-11 A | 2011-02-26 A | D02S305103C0 | 100% |  | 2011-01-08 | 2011-01-18 |  |  | STRUCTURAL STEEL [19963 h]; STRUCTURAL STEEL [780 T(Fe)]; Cost | D03S305101C0 | 100 | DT | C | 03 | S3 | ST | 051 | 01 | BILL 5 | B05 | S2 | 01 | R00 | ACF03 | 051 | 5429985.68 | Z2 | DT | P03 | O | A3 | EREC | 1FLR | ST |  |  |  |  |  |  |  |  |
| D03S105305C0 |  | DT-03 ; Metal Decking 3rd FLR (Zone S1) |  | 15d | 2010-12-18 A | 2011-03-08 A | D03S105103C0, D04S105101C0 | 100% |  | 2011-01-05 | 2011-01-22 |  |  | METAL DECKING [2501 h]; METAL DECKING [3166 m2]; Cost | D03S105305C0 | 100 | DT | C | 03 | S1 | ST | 053 | 05 | BILL 5 | B05 | S2 | 03 | R00 | ACF03 | 053 |  | Z2 | DT | P03 | O | A3 | MDEC | 1FLR | ST |  |  |  |  |  |  |  |  |
| D03S305103C0 |  | DT-03 ; Alignment & welding of 3rd FLR (Zone S3) |  | 6d | 2010-12-18 A | 2011-03-08 A | D03S305101C0 | 100% |  | 2011-02-10 | 2011-02-17 |  |  | STRUCTURAL STEEL [1448 h]; Cost | D03S305103C0 | 100 | DT | C | 03 | S3 | ST | 051 | 03 | BILL 5 | B05 | S2 | 02 | R00 | ACF03 | 051 |  | Z2 | DT | P03 | O | A3 | EREC | 1FLR | ST |  |  |  |  |  |  |  |  |
| D03S205305C0 |  | DT-03 ; Metal Decking 3rd FLR (Zone S2) |  | 20d | 2010-12-24 A | 2011-03-08 A | D03S205103C0, D04S205101C0 | 100% |  | 2011-01-15 | 2011-02-07 |  |  | METAL DECKING [3106 h]; METAL DECKING [3932 m2]; Cost | D03S205305C0 | 100 | DT | C | 03 | S2 | ST | 053 | 05 | BILL 5 | B05 | S2 | 03 | R00 | ACF03 | 053 |  | Z2 | DT | P03 | O | A3 | MDEC | 1FLR | ST |  |  |  |  |  |  |  |  |
| D03S305305C0 |  | DT-03 ; Metal Decking 3rd FLR (Zone S3) |  | 20d | 2011-01-04 A | 2011-02-28 A | D03S305103C0, D04S305101C0 | 100% |  | 2011-01-15 | 2011-02-06 |  |  | METAL DECKING [3422 h]; METAL DECKING [4332 m2]; Cost | D03S305305C0 | 100 | DT | C | 03 | S3 | ST | 053 | 05 | BILL 5 | B05 | S2 | 03 | R00 | ACF03 | 053 |  | Z2 | DT | P03 | O | A3 | MDEC | 1FLR | ST |  |  |  |  |  |  |  |  |
| D03S103399C0 |  | DT-03 ; Concrete on Metal Decking 3rd FLR (Zone S1) |  | 10d | 2011-01-10 A | 2011-03-23 A | D03S105305C0 | 100% |  | 2011-01-05 | 2011-01-17 |  |  | CONCRETE [14320 h]; CONCRETE [360 m3]; Cost | D03S105335C0 | 100 | DT | C | 03 | S1 | CT | 033 | 99 | BILL 5 | B05 | S2 | 08 | R00 | ACF03 | 033 |  | Z2 | DT | P03 | O | A3 | MDEC | 1FLR |  |  |  |  |  |  |  |  |  |
| D03S203399C0 |  | DT-03 ; Concrete on Metal Decking 3rd FLR (Zone S2) |  | 10d | 2011-01-10 A | 2011-03-23 A | D03S205305C0 | 100% |  | 2011-01-26 | 2011-02-07 |  |  | CONCRETE [21384 h]; CONCRETE [538 m3]; Cost | D03S205335C0 | 100 | DT | C | 03 | S2 | CT | 033 | 99 | BILL 5 | B05 | S2 | 08 | R00 | ACF03 | 033 |  | Z2 | DT | P03 | O | A3 | MDEC | 1FLR |  |  |  |  |  |  |  |  |  |
| D03S303399C0 |  | DT-03 ; Concrete on Metal Decking 3rd FLR (Zone S3) |  | 10d | 2011-01-17 A | 2011-03-23 A | D03S305305C0 | 100% |  | 2011-02-07 | 2011-02-17 |  |  | CONCRETE [23496 h]; CONCRETE [591 m3]; Cost | D03S305335C0 | 100 | DT | C | 03 | S3 | CT | 033 | 99 | BILL 5 | B05 | S2 | 08 | R00 | ACF03 | 033 |  | Z2 | DT | P03 | O | A3 | MDEC | 1FLR |  |  |  |  |  |  |  |  |  |
| D03S107807C0 |  | DT-03 ; Cementitious Fire Proofing works 3rd FLR (Zone S1) |  | 12d | 2011-02-26 A | 2011-06-04 A | D04S103399C0 | 100% |  | 2011-03-15 | 2011-03-29 |  |  | CEMENTITIOUS FIREPROOFING [2190 h]; CEMENTITIOUS FIREPROOFING [4379 m2]; Cost | D03S107807C0 | 95 | DT | C | 03 | S1 | ST | 078 | 07 | BILL 5 | B05 | S2 | 04 | R00 | ACF03 | 078 |  | Z2 | DT | P03 | O | A3 | FIRE | 1FLR | ST | 20621.69 |  |  |  |  |  |  |  |
| D03S207807C0 |  | DT-03 ; Cementitious Fire Proofing works 3rd FLR (Zone S2) |  | 14d | 2011-02-26 A | 2011-06-04 A | D04S203399C0 | 100% |  | 2011-03-28 | 2011-04-12 |  |  | CEMENTITIOUS FIREPROOFING [2719 h]; CEMENTITIOUS FIREPROOFING [5438 m2]; Cost | D03S207807C0 | 95 | DT | C | 03 | S2 | ST | 078 | 07 | BILL 5 | B05 | S2 | 04 | R00 | ACF03 | 078 |  | Z2 | DT | P03 | O | A3 | FIRE | 1FLR | ST | 25610.42 |  |  |  |  |  |  |  |
| D03S307807C0 |  | DT-03 ; Cementitious Fire Proofing works 3rd FLR (Zone S3) |  | 14d | 2011-02-26 A | 2011-05-30 A | D04S303399C0 | 100% |  | 2011-03-26 | 2011-04-11 |  |  | CEMENTITIOUS FIREPROOFING [2996 h]; CEMENTITIOUS FIREPROOFING [5992 m2]; Cost | D03S307807C0 | 100 | DT | C | 03 | S3 | ST | 078 | 07 | BILL 5 | B05 | S2 | 04 | R00 | ACF03 | 078 |  | Z2 | DT | P03 | O | A3 | FIRE | 1FLR | ST |  |  |  |  |  |  |  |  |
| D03CO04413C0 |  | DT-03 ; M1 Bracket (Common Zone) |  | 18d | 2011-03-09 A | 2011-05-16 A | D03S107807C0, D03S207807C0, D03S307807C0 | 100% |  | 2011-04-13 | 2011-05-03 |  |  | FACADE METAL PANEL 1 [1232.7 h]; Cost | D03CO04413C0 | 100 | DT | C | 03 | CO | FA | 044 | 13 | BILL 5 | B05 | S2 | FM1 | R00 | ACF05 | 044 |  |  |  |  |  |  |  |  | FA |  | 100 |  |  |  |  |  |  |
| D03GN01507C0 |  | DT-03 ; Temporary Enclosure | level of effort | 154d | 2011-05-08 A | 2012-05-15 | D03G109203C0 SS, D03TR09203C0 SS, D03G209203C0 SS, D03UR09203C0 SS, D03EY09203C0 SS, D03PA09203C0 SS |  | 189d | 2011-06-14 | 2011-12-19 | 63d | 0d | Labor General [0.6 h]; Cost |  |  | DT | C | 03 | GEN | FA | GEN |  | BILL 5 | B05 |  | TE | R00 | ACF05 | 010 |  |  |  |  |  |  |  |  | FA |  | 26 | 42.31 | 25.16 |  |  |  |  |
| D03CO04415C0 |  | DT-03 ; M1 External Partition (Common Zone) |  | 150d | 2011-05-30 A | 2011-10-26 | D02CO04415C0 SS+20d, D03CO04413C0, D03GN01507C0 FF | 85% | 22.5d | 2011-06-26 | 2011-12-27 | 114.9d | 0d | PARTITIONS [3321.93 m]; PARTITIONS [16543.6 h]; Cost | D03CO04415C0 | 35 | DT | C | 03 | CO | FA | 044 | 15 | BILL 5 | B05 | S2 | FM1 | R00 | ACF05 | 044 |  |  |  |  |  |  |  |  | FA | 613999.49 | 80 | 85 | 60 |  |  |  |  |
| D03CO04417C0 |  | DT-03 ; M1 Metal Panel (Common Zone) |  | 68d | 2011-08-10 A | 2011-11-15 | D02CO04417C0 SS, D03CO04415C0 SS | 46% | 36.72d | 2011-08-16 | 2011-11-09 | 247.28d | 0d | FACADE METAL PANEL 1 [9152.4 h]; FACADE METAL PANEL 1 [3345 m2]; FACADE TOTAL QUANTITY m2 [3345 m2]; Cost | D03CO04417C0 |  | DT | C | 03 | CO | FA | 044 | 17 | BILL 5 | B05 | S2 | FM1 | R00 | ACF05 | 044 |  |  |  |  |  |  |  |  | FA |  | 20 | 30 | 0 | 0 | 0 | 0 | 0 |
| D03CO04455C0 |  | DT-03 ; M1 Inner Side of External Partition (Common Zone) |  | 54d | 2011-09-05 A | 2012-03-08 | D03CO04415C0, D03G109205C0 SS, D03G209205C0 SS, D03EY09205C0 SS, D03PA09205C0 SS | 60% | 21.6d | 2012-02-09 | 2012-04-11 | 28.3d | 6.3d | FACADE METAL PANEL 1 [16967.4 h]; Cost | DP3CO04415C0 |  | DT | C | 03 | CO | FA | 044 | 15 | BILL 5 | B05 | S1 | FM1 | R00 | ACF05 | 044 |  |  |  |  |  |  |  |  | FA |  |  |  |  |  |  |  |  |
| D03CO04433C0 |  | DT-03 ; C3 Bracket (Canyon) |  | 50d | 2012-02-05 | 2012-04-02 | D03S107807C0, D03S207807C0, D03S307807C0, D04CO04433C0 SS |  |  |  |  | 45d | 0d | FACADE CURTAIN WALL 3 [124.9 h]; Cost | D03CO04433C0 |  | DT | C | 03 | CO | FA | 044 | 33 | BILL 5 | B05 | S2 | FC3 | R00 | ACF05 | 044 |  |  |  |  |  |  |  |  | FA |  |  |  |  |  |  |  |  |
| D03CO04435C0 |  | DT-03 ; C3 Transom & Mullion (Canyon) |  | 60d | 2012-02-07 | 2012-04-16 | D03CO04433C0 SS+2d, D03CO04433C0 FF |  |  |  |  | 63d | 0d | FACADE CURTAIN WALL 3 [499.5 h]; Cost | D03CO04435C0 |  | DT | C | 03 | CO | FA | 044 | 35 | BILL 5 | B05 | S2 | FC3 | R00 | ACF05 | 044 |  |  |  |  |  |  |  |  | FA |  |  |  |  |  |  |  |  |
| D03CO04437C0 |  | DT-03 ; C3 Glazing (Canyon) |  | 83d | 2012-02-09 | 2012-05-15 | D03CO04435C0 SS+2d, D03GN01507C0 FF, D03CO04435C0 FF |  |  |  |  | 63d | 18d | FACADE CURTAIN WALL 3 [356.5 h]; FACADE CURTAIN WALL 3 [130 m2]; FACADE TOTAL QUANTITY m2 [130 m2]; Cost | D03CO04437C0 |  | DT | C | 03 | CO | FA | 044 | 37 | BILL 5 | B05 | S2 | FC3 | R00 | ACF05 | 044 |  |  |  |  |  |  |  |  | FA |  |  |  |  |  |  |  |  |
| D03CO04430C0 |  | DT-03 ; VE ROOF System Installation (Common Zone) |  | 12d | 2012-03-07 | 2012-03-20 | DGLCO04437C0 |  |  |  |  | 239d | 143d | Labor General [0.6 h]; Cost | I05CO04411C0 |  | DT | C | 03 | CO | FA | 044 | 11 | BILL 5 | B05 | S2 | VER | R00 | ACF05 | 044 |  |  |  |  |  |  |  |  | FA |  |  |  |  |  |  |  |  |
| D03CO04429C0 |  | DT-03 ; SO Storefront System Installation (Canyon Bridge) |  | 12d | 2012-04-16 | 2012-04-30 | D03CO04433C0 FF, D02CO04425C0 |  |  |  |  | 204.12d | 108.12d | Labor General [0.6 h]; PARTITIONS [32 m]; Cost | I05CO04411C0 |  | DT | C | 03 | CO | FA | 044 | 11 | BILL 5 | B05 | S2 | SO | R00 | ACF05 | 044 |  |  |  |  |  |  |  |  | FA |  |  |  |  |  |  |  |  |
| D03CO04418C0 |  | DT-03 ; CY Courtyard System Installation (Common Zone) |  | 54d | 2012-06-03 | 2012-08-05 | D02CO04418C0 |  |  |  |  | 63d | 0d | Labor General [9260.7 h]; Cost | D02CO04417C0 |  | DT | C | 03 | CO | FA | 044 | 17 | BILL 5 | B05 | S2 | CY | R00 | ACF05 | 044 |  |  |  |  |  |  |  |  | FA |  |  |  |  |  |  |  |  |
| D03CO04434C0 |  | DT-03 ; CA-1 Canyon atrium interior glazing (Canyon) |  | 60d | 2012-06-06 | 2012-08-15 | D03CO04437C0, D02CO04434C0 SS+18d |  |  |  |  | 45d | 33.85d | Labor General [0.6 h]; Cost | DGLCO04433C0 |  | DT | C | 03 | CO | FA | 044 | 33 | BILL 5 | B05 | S2 | CA | R00 | ACF05 | 044 |  |  |  |  |  |  |  |  | FA |  |  |  |  |  |  |  |  |

| ID | WBS | Activity | Duration | Start | Finish | Predecessors | Complete | Remaining | Planned start | Planned finish | Total float | Free float | Resources | Cost | Actual cost | change id | RENZ % COMPLETE | Claimed This Month | CCAD BUILDING(SET) | CCAD PHASE(SET) | CCAD FLOOR(SET) | CCAD ZONE(SET) | CCAD WORK(SET) | CCAD SECTION(SET) | CCAD SERIAL No.(SET) | CCAD SUB ZONE MEP(SET) | CCAD CBS(SET) | CCAD BILL(SET) | CCAD HANDOVER(SET) | CCAD TAG(SET) | CCAD REV(SET) | CCADACF (SET) | CCAD CSA | CCAD SSCF | Act Selector % | July2011 Target% Complete | user_number8 | user_integer1 | user_integer2 | user_number7 | Change Order # | NEW ACTIVITY ID | P_811 | P_711 | CCAD DIVISION(SET) | CCAD MEQ | R3 Finish |
| --- | --- | --- | --- | --- | --- | --- | --- | --- | --- | --- | --- | --- | --- | --- | --- | --- | --- | --- | --- | --- | --- | --- | --- | --- | --- | --- | --- | --- | --- | --- | --- | --- | --- | --- | --- | --- | --- | --- | --- | --- | --- | --- | --- | --- | --- | --- | --- |
|  | 02 | **Gen Or, Pat Hold, Prev/Recv** |  | 2011-03-10 | 2013-01-13 |  |  |  |  |  |  |  |  |  |  |  |  |  |  |  |  |  |  |  |  |  |  |  |  |  |  |  |  |  |  |  |  |  |  |  |  |  |  |  |  |  |  |
| D03G121111C0 |  | DT-03 ; 1st Fix, Inst of Sprinkler main pipe (Prep/Recv) | 44d | 2011-03-10 A | 2011-06-22 A | D03G122005C0 SS, D03G123001C0 | 100% |  | 2011-05-22 | 2011-07-12 |  |  | MECHANICAL [981.6 h]; Cost [53543.7 AED] | 53,543.69 | 53,543.69 | D03G121111C0 | 60 | 24856.43 | DT | C | 03 | G1 | ME | 211 | 11 | 1S | BILL 5 | B05 | S2 | 1F | R00 | ACF04 | MEP | 211 | M1F |  |  |  |  |  |  |  |  |  |  |  |  |
| D03G122019C0 |  | DT-03 ; 1st Fix, Inst of Drainage pipe (ceiling) (Prep/Recv) | 250d | 2011-03-31 A | 2011-10-05 | D03G123001C0, D03G127010C0 SS | 98% | 5d | 2011-05-10 | 2012-03-07 | 75.12d | 0d | PLUMBING [1173.6 h]; Cost [61888.2 AED] | 61,888.15 | 60,650.39 | D03G122019C0 | 40 | 36751 | DT | C | 03 | G1 | ME | 220 | 19 | 1S | BILL 5 | B05 | S2 | 1F | R00 | ACF04 | MEP | 220 | M1F | 98 |  |  |  |  |  |  |  |  |  |  |  |
| D03G123001C0 |  | DT-03 ; 1st Fix, Inst. of Supports for MEP (Prep/Recv) | 27d | 2011-04-07 A | 2011-06-01 A | D03S107807C0 SS, D03S207807C0 SS | 100% |  | 2011-03-28 | 2011-04-27 |  |  | MECHANICAL [1338 h]; Cost [75432.9 AED] | 75,432.94 | 75,432.94 | D03G123001C0 | 95 | 4375.11 | DT | C | 03 | G1 | ME | 230 | 01 | 1S | BILL 5 | B05 | S2 | 1F | R00 | ACF04 | MEP | 230 | M1F |  |  |  |  |  |  |  |  |  |  |  |  |
| D03G109203C0 |  | DT-03 ; Partitions 1st face (Prep/Recv) | 90d | 2011-05-08 A | 2012-01-26 | D03G109201C0 SS+12d, D03G122019C0 FF, D03G123017C0 FF, D03G126013C0 FF, D03G127010C0 | 70% | 27d | 2011-07-03 | 2011-10-17 | 21.73d | 6.3d | PARTITIONS [1392 m]; PARTITIONS [8059 h]; Cost |  |  | D03G109203C0 | 5 | 101666.01 | DT | C | 03 | G1 | PT | 092 | 03 |  | BILL 5 | B05 | S2 | 2F | R00 | ACF06 | GP | 092 | P1F |  | 0 | 0 | 0 | 0 | 314 | 945 | 50 | 27 |  |  |  |
| D03G109201C0 |  | DT-03 ; Metal Studs (Prep/Recv) | 90d | 2011-05-15 A | 2011-12-14 | D03G123001C0, D03PA09201C0 | 77% | 20.7d | 2011-06-18 | 2011-10-03 | 10.03d | 0d | PARTITIONS [10306 h]; PARTITIONS - Metal Studs [1392 m]; Cost |  |  | D03G109201C0 | 20 | 264067.55 | DT | C | 03 | G1 | PT | 092 | 01 |  | BILL 5 | B05 | S2 | 1F | R00 | ACF06 | GP | 092 | PMS |  | 0 | 0 | 0 | 0 | 313 | 944 | 73 | 66 |  |  |  |
| D03G121117C0 |  | DT-03 ; 1st Fix, Inst of Sprinkler branch pipe (Prep/Recv) | 62.88d | 2011-05-15 A | 2011-06-15 A | D03G109201C0, D03G121111C0, D03G105503C0 FF+18d | 100% |  | 2011-07-24 | 2011-10-06 |  |  | MECHANICAL [1441.2 h]; Cost [78749.8 AED] | 78,749.79 | 78,749.79 | D03G121117C0 | 60 | 36516.52 | DT | C | 03 | G1 | ME | 211 | 17 | 1S | BILL 5 | B05 | S2 | 1F | R00 | ACF04 | MEP | 211 | M1F |  |  |  |  |  |  |  |  |  |  |  |  |
| D03G122005C0 |  | DT-03 ; 1st Fix, Inst of Water supply pipe (ceiling) (Prep/Recv) | 150d | 2011-05-15 A | 2011-11-03 | D03G122019C0 SS+10d, D03G123001C0 | 80% | 30d | 2011-06-14 | 2011-12-15 | 75.12d | 0d | PLUMBING [4896 h]; Cost [264473 AED] | 264,473.49 | 211,578.79 | D03G122005C0 | 60 |  | DT | C | 03 | G1 | ME | 220 | 05 | 1S | BILL 5 | B05 | S2 | 1F | R00 | ACF04 | MEP | 220 | M1F | 80 |  |  |  |  |  |  |  |  |  |  |  |
| D03G123017C0 |  | DT-03 ; 1st Fix, Inst of CHW pipe (Prep/Recv) | 120d | 2011-05-15 A | 2012-01-26 | D03G121111C0 SS+2d, D03G123001C0, D03G105503C0 FF+18d | 75% | 30d | 2011-06-14 | 2011-11-05 | 10.03d | 0d | MECHANICAL [6325.2 h]; Cost [345418 AED] | 345,418.28 | 259,063.71 | D03G123017C0 | 45 | 20032.61 | DT | C | 03 | G1 | ME | 230 | 17 | 1S | BILL 5 | B05 | S2 | 1F | R00 | ACF04 | MEP | 230 | M1F | 65 |  |  |  |  |  |  |  |  |  |  |  |
| D03G123023C0 |  | DT-03 ; 1st Fix, Inst of Main Ducting (Prep/Recv) | 180d | 2011-05-15 A | 2012-02-28 | D03G123001C0 SS+7d, D03G123017C0 | 85% | 27d | 2011-08-07 | 2012-03-14 | 10.03d | 0d | MECHANICAL [11402.4 h]; Cost [622619 AED] | 622,619.08 | 529,226.22 | D03G123023C0 | 45 | 108328.12 | DT | C | 03 | G1 | ME | 230 | 23 | 1S | BILL 5 | B05 | S2 | 1F | R00 | ACF04 | MEP | 230 | M1F | 85 |  |  |  |  |  |  |  |  |  |  |  |
| D03G126001C0 |  | DT-03 ; 1st Fix, Inst of Trunking/Conduiting (Prep/Recv) | 100d | 2011-05-15 A | 2011-11-03 | D03G123001C0, D03S107807C0, D03S207807C0 | 70% | 30d | 2011-06-02 | 2011-10-01 | 60.12d | 0d | ELECTRICAL [824.4 h]; Cost [42423.2 AED] | 42,423.24 | 29,696.27 | D03G126001C0 | 20 | 34990.64 | DT | C | 03 | G1 | ME | 260 | 01 | 1S | BILL 5 | B05 | S2 | 1F | R00 | ACF04 | MEP | 260 | M1F | 88 |  |  |  |  |  |  |  |  |  |  |  |
| D03G127010C0 |  | DT-03 ; 1st Fix, Inst of Trunking for ELV system (Prep/Recv) | 100d | 2011-05-15 A | 2011-11-03 | D03G123001C0, D03G126001C0 SS+10d, D03S107807C0, D03S207807C0 | 70% | 30d | 2011-06-14 | 2011-10-12 | 60.12d | 0d | ELECTRICAL [1689.6 h]; Cost [88597.9 AED] | 88,597.89 | 62,018.53 | D03G127010C0 | 10 | 77088.12 | DT | C | 03 | G1 | ME | 270 | 10 | 1S | BILL 5 | B05 | S2 | 1F | R00 | ACF04 | MEP | 270 | M1F | 85 |  |  |  |  |  |  |  |  |  |  |  |
| D03G122011C0 |  | DT-03 ; 2nd Fix, Drainage/Water pipe (wall) (Prep/Recv) | 66d | 2011-05-17 A | 2012-01-26 | D03G109201C0, DAFMI22002R20 FS+72d | 45% | 36.3d | 2011-06-25 | 2011-09-12 | 15.43d | 0d | PLUMBING [1173.6 h]; Cost [61888.2 AED] | 61,888.15 | 27,849.67 | D03G122011C0 | 40 | 3675.09 | DT | C | 03 | G1 | ME | 220 | 11 | 2n | BILL 5 | B05 | S2 | 2F | R00 | ACF07 | MEP | 220 |  | 75 |  |  |  |  |  |  |  |  |  |  |  |
| D03G126013C0 |  | DT-03 ; 1st Fix, Inst of Cable Tray (Prep/Recv) | 150d | 2011-06-01 A | 2011-11-03 | D03G123001C0, D03G127010C0 SS+7d, D03S107807C0, D03S207807C0 | 80% | 30d | 2011-06-01 | 2011-12-01 | 87.12d | 0d | ELECTRICAL [430.8 h]; Cost [23263.3 AED] | 23,263.34 | 18,610.67 | D03G126013C0 |  | 21601.36 | DT | C | 03 | G1 | ME | 260 | 13 | 1S | BILL 5 | B05 | S2 | 1F | R00 | ACF04 | MEP | 260 | M1F | 90 |  |  |  |  |  |  |  |  |  |  |  |
| D03G127001C0 |  | DT-03 ; 1st Fix, Wiring/ Cabling work (Prep/Recv) | 78d | 2011-06-14 A | 2012-01-23 | D03G126001C0, D03G126013C0, D03G127010C0 | 20% | 62.4d | 2011-08-14 | 2011-11-19 | 102.72d | 92.7d | ELECTRICAL [436.8 h]; Cost [21894.9 AED] | 21,894.91 | 4,378.98 | D03G127001C0 |  | 9027.43 | DT | C | 03 | G1 | ME | 270 | 01 | 1S | BILL 5 | B05 | S2 | 1F | R00 | ACF04 | MEP | 270 | M1F | 35 |  |  |  |  |  |  |  |  |  |  |  |
| D03G123015C0 |  | DT-03 ; 2nd Fix, Insulation of CHW pipe & Duct (Prep/Recv) | 100d | 2011-07-10 A | 2012-04-15 | D03G123009C0, D03G123017C0, D03G123023C0 | 65% | 35d | 2011-09-01 | 2012-01-03 | 32.33d | 22.3d | MECHANICAL [5311.2 h]; Cost [286617 AED] | 286,617.06 | 186,301.09 | D03G123015C0 |  |  | DT | C | 03 | G1 | ME | 230 | 15 | 2n | BILL 5 | B05 | S2 | 2F | R00 | ACF07 | MEP | 230 |  | 60 |  |  |  |  |  |  | 65 | 60 |  |  |  |
| D03G105503C0 |  | DT-03 ; Ceiling Support for medical equipment (Prep/Recv) | 20d | 2011-09-05 A | 2012-01-05 | D03G109201C0, DAFMI22002R20 FS+72d | 10% | 18d | 2011-12-22 | 2012-01-15 | 10.03d | 0d | SECONDARY STEEL [156 h]; STRUCTURAL STEEL [16 T(Fe)]; Cost |  |  | D03G105503C0 |  |  | DT | C | 03 | G1 | SW | 055 | 03 |  | BILL 5 | B05 | S2 | 03 | R00 | ACF03 |  | b |  |  |  |  |  |  | 335 | 962 |  |  |  |  |  |
| D03G123008C0 |  | DT-03 ; 1st Fix, Inst of VCD's/FD's (Prep/Recv) | 66d | 2011-09-05 A | 2012-05-12 | D03G123023C0, D03G105503C0 FF+18d | 5% | 62.7d | 2011-11-10 | 2012-01-29 | 10.03d | 0d | MECHANICAL [4312.8 h]; Cost [232964 AED] | 232,964.23 | 11,648.21 | D03G123008C0 |  |  | DT | C | 03 | G1 | ME | 230 | 08 | 1S | BILL 5 | B05 | S2 | 1F | R00 | ACF04 | MEP | 230 | M1F | 85 |  |  |  |  |  |  |  |  |  |  |  |
| D03G123009C0 |  | DT-03 ; 2nd Fix, Inst of VAV'S CHW connection (Prep/Recv) | 36d | 2011-09-05 A | 2012-03-05 | D03G123017C0 | 10% | 32.4d | 2011-10-06 | 2011-11-20 | 32.33d | 0d | MECHANICAL [1684.8 h]; Cost [91006.1 AED] | 91,006.06 | 9,100.61 | D03G123009C0 |  |  | DT | C | 03 | G1 | ME | 230 | 09 | 2n | BILL 5 | B05 | S2 | 2F | R00 | ACF07 | MEP | 230 |  | 25 |  |  |  |  |  |  |  |  |  |  |  |
| D03G105511C0 |  | DT-03 ; Wall reinforcement for MEP/Medical (Prep/Recv) | 24d | 2011-12-14 | 2012-01-12 | D03G109201C0, DAFMI22002R02 FS+72d |  |  |  |  | 33.73d | 18.3d | SECONDARY STEEL [67 h]; Cost |  |  | D03G105511C0 |  |  | DT | C | 03 | G1 | SW | 055 | 11 |  | BILL 5 | B05 | S2 | 03 | R00 | ACF03 |  | b |  |  |  |  |  |  |  |  |  |  |  |  |  |
| D03G122007C0 |  | DT-03 ; 1st Fix, Inst of Medical Gas pipe (Prep/Recv) | 48d | 2011-12-14 | 2012-02-11 | D03G122005C0 SS+6d, D03G123001C0, D03G109201C0 |  |  |  |  | 15.72d | 0d | PLUMBING [1616.4 h]; Cost |  |  | D03G122007C0 |  |  | DT | C | 03 | G1 | ME | 220 | 07 | 1S | BILL 5 | B05 | S2 | 1F | R00 | ACF04 | MEP | 220 | M1F | 80 |  |  |  |  |  |  |  |  |  |  |  |
| D03G122015C0 |  | DT-03 ; 2nd Fix, Medical Gas pipe (Prep/Recv) | 36d | 2011-12-14 | 2012-01-26 | D03G109201C0, D03G122007C0 SS |  |  |  |  | 15.72d | 0.3d | PLUMBING [1616.4 h]; Cost |  |  | D03G122015C0 |  |  | DT | C | 03 | G1 | ME | 220 | 15 | 2n | BILL 5 | B05 | S2 | 2F | R00 | ACF07 | MEP | 220 |  | 25 |  |  |  |  |  |  |  |  |  |  |  |
| D03G126009C0 |  | DT-03 ; 2nd Fix, Inst of Wall conduites (Prep/Recv) | 36d | 2011-12-14 | 2012-01-26 | D03G109201C0 |  |  |  |  | 15.72d | 0.3d | ELECTRICAL [824.4 h]; Cost |  |  | D03G126009C0 |  |  | DT | C | 03 | G1 | ME | 260 | 09 | 2n | BILL 5 | B05 | S2 | 2F | R00 | ACF07 | MEP | 260 |  | 25 |  |  |  |  |  |  |  |  |  |  |  |
| D03G108103C0 |  | DT-03 ; Door Frames (Prep/Recv) | 42d | 2011-12-19 | 2012-02-07 | D03G109201C0 SS+14d, GNHE08101C0 FS+93d, D03EY08103C0 SS+3d |  |  |  |  | 48d | 0d | ASSORTED DOORS [981 h]; Cost |  |  | D03G108103C0 |  |  | DT | C | 03 | G1 | DO | 081 | 03 |  | BILL 5 | B05 | S2 | DF | R00 | ACF06 |  | 081 |  |  |  |  |  |  | 316 | 947 |  |  | 08 |  |  |
| D03G101005C0 |  | DT-03 ; 2nd, Wall Inspection by Consultant (Prep/Recv) | 6d | 2012-01-26 | 2012-02-02 | D03G122011C0, D03G122015C0, D03G126009C0 |  |  |  |  | 15.43d | 0d | Labor General [1.2 h]; Cost |  |  | D03G101005C0 |  |  | DT | C | 03 | G1 | ME | 010 | 05 | 2n | BILL 5 | B05 | S2 | WI | R00 | ACF07 | MEP | 010 |  | 25 |  |  |  |  |  |  |  |  |  |  |  |
| D03G109205C0 |  | DT-03 ; Partitions Closing (Prep/Recv) | 48d | 2012-02-02 | 2012-03-31 | D03G101005C0, D03G105511C0, D03G109203C0, D03G122005C0, D03G122019C0, DAFOA09206C1 FF, D03G108103C0 FF, DAFMI22002R20 FS+72d |  |  |  |  | 15.43d | 0d | PARTITIONS [1392 m]; PARTITIONS [10326 h]; Cost |  |  | D03G109205C0 |  |  | DT | C | 03 | G1 | PT | 092 | 05 |  | BILL 5 | B05 | S2 | FF | R00 | ACF06 | GP | 092 | P2F |  |  |  |  |  | 315 | 946 |  |  |  |  |  |
| D03G107103C0 |  | DT-03 ; Waterproofing (Prep/Recv) | 12d | 2012-03-31 | 2012-04-14 | D03G108103C0, D03G109205C0 |  |  |  |  | 69.42d | 59.4d | THERMAL & MOISTURE [712 h]; THERMAL & MOISTURE [4738 m2]; Cost |  |  | D03G107103C0 |  |  | DT | C | 03 | G1 | FF | 071 | 03 |  | BILL 5 | B05 | S2 | 01 | R00 | ACF03 |  | 071 |  |  |  |  |  |  | 105 | 999 |  |  |  |  |  |
| D03G109901C0 |  | DT-03 ; Wall Prime & 1st coat (Prep/Recv) | 30d | 2012-03-31 | 2012-05-05 | D03G109205C0 |  |  |  |  | 15.43d | 0d | WALL PAINT [2178 h]; WALL PAINT [2718 m2]; Cost |  |  | D03G109901C0 |  |  | DT | C | 03 | G1 | PA | 099 | 01 |  | BILL 5 | B05 | S2 | 01 | R00 | ACF06 |  | 099 |  |  |  |  |  |  | 328 | 956 |  |  |  |  |  |
| D03G126005C0 |  | DT-03 ; 2nd Fix, Wiring for Power/Lighting/Emergency (Prep/Recv) | 36d | 2012-03-31 | 2012-05-12 | D03G109205C0 |  |  |  |  | 93.42d | 0d | ELECTRICAL [436.8 h]; Cost |  |  | D03G126005C0 |  |  | DT | C | 03 | G1 | ME | 260 | 05 | 2n | BILL 5 | B05 | S2 | 2F | R00 | ACF07 | MEP | 260 |  |  |  |  |  |  |  |  |  |  |  |  |  |
| D03G126007C0 |  | DT-03 ; 2nd Fix, Cable Pulling (Prep/Recv) | 42d | 2012-03-31 | 2012-05-19 | D03G109201C0 SS+6d, D03G109205C0 |  |  |  |  | 141.43d | 131.4d | ELECTRICAL [6634.8 h]; Cost |  |  | D03G126007C0 |  |  | DT | C | 03 | G1 | ME | 260 | 07 | 2n | BILL 5 | B05 | S2 | 2F | R00 | ACF07 | MEP | 260 |  | 25 |  |  |  |  |  |  |  |  |  |  |  |
| D03G126011C0 |  | DT-03 ; 2nd Fix, Inst of Equipment (DB) (Prep/Recv) | 48d | 2012-03-31 | 2012-05-26 | D03G109205C0 |  |  |  |  | 87.42d | 65.4d | ELECTRICAL [4054.8 h]; Cost |  |  | D03G126011C0 |  |  | DT | C | 03 | G1 | ME | 260 | 11 | 2n | BILL 5 | B05 | S2 | 2F | R00 | ACF04 | MEP | 260 |  |  |  |  |  |  |  |  |  |  |  | E |  |
| D03G126053C0 |  | DT-03 ; 2nd Fix, Wiring / Cabling (Prep/Recv) | 36d | 2012-03-31 | 2012-05-12 | D03G126009C0, D03G109203C0, D03G109205C0 |  |  |  |  | 147.43d | 137.4d | ELECTRICAL [436.8 h]; Cost |  |  | D03G126053C0 |  |  | DT | C | 03 | G1 | ME | 260 | 53 | 2n | BILL 5 | B05 | S2 | 2F | R00 | ACF07 | MEP | 260 |  |  |  |  |  |  | 389 | 977 |  |  |  |  |  |
| D03G105501C0 |  | DT-03 ; Handrails & balustrade (Prep/Recv) | 34.75d | 2012-05-05 | 2012-06-14 | D03G109901C0 |  |  |  |  | 64.67d | 54.65d | SECONDARY STEEL [321 h]; Cost |  |  | D03G105501C0 |  |  | DT | C | 03 | G1 | SW | 055 | 01 |  | BILL 5 | B05 | S2 | 01 | R00 | ACF03 |  | a |  |  |  |  |  |  |  |  |  |  |  |  |  |
| D03G109501C0 |  | DT-03 ; Ceiling Grid and Service Tile (Prep/Recv) | 36d | 2012-05-12 | 2012-06-24 | D03G105503C0, D03G109205C0 SS+15d, D03G121117C0, D03G123008C0, D03G123009C0, D03G123015C0, D03G127001C0, DAFMI22003R02 FS+72d, D03G109901C0 |  |  |  |  | 10.03d | 0d | CEILING GRID FOR GYPSUM [5766.08 h]; CEILING GRID FOR GYPSUM [493.4 m2]; Cost |  |  | D03G109501C0 |  |  | DT | C | 03 | G1 | CE | 095 | 01 |  | BILL 5 | B05 | S2 | 01 | R00 | ACF06 |  | 095 |  |  |  |  |  |  | 323 | 952 |  |  |  |  | R3 |
| D03G126015C0 |  | DT-03 ; Final Fix, Termination & Gladding of Cables (Prep/Recv) | 48d | 2012-05-12 | 2012-07-08 | D03G126005C0 |  |  |  |  | 93.42d | 83.4d | ELECTRICAL [368.4 h]; Cost |  |  | D03G126015C0 |  |  | DT | C | 03 | G1 | ME | 260 | 15 | FF | BILL 5 | B05 | S2 | FF | R00 | ACF07 | MEP | 260 |  |  |  |  |  |  |  |  |  |  |  |  |  |
| D03G109305C0 |  | DT-03 ; Flooring (Terrazzo) (Prep/Recv) | 48d | 2012-06-24 | 2012-08-21 | D03G107103C0, D03G109501C0 |  |  |  |  | 10.03d | 0d | TERRAZO FLOOR [645 m2]; TERRAZO FLOOR [1168 h]; Cost |  |  | D03G109305C0 |  |  | DT | C | 03 | G1 | FF | 096 | 05 |  | BILL 5 | B05 | S2 | 07 | R00 | ACF06 |  | TZ |  |  |  |  |  |  | 106 | 1000 |  |  |  |  |  |
| D03G109601C0 |  | DT-03 ; Flooring (Rubber & etc) (Prep/Recv) | 48d | 2012-06-24 | 2012-08-21 | D03G109901C0, D03G109501C0, D03G105501C0 FF |  |  |  |  | 10.03d | 0d | RUBBER FLOOR [400 h]; RUBBER FLOOR [996 m2]; Cost |  |  | D03G109601C0 |  |  | DT | C | 03 | G1 | FF | 096 | 01 |  | BILL 5 | B05 | S2 | 03 | R00 | ACF06 |  | RF |  |  |  |  |  |  | 326 | 955 |  |  |  |  |  |
| D03G109905C0 |  | DT-03 ; Ceiling Prime & 1st coat (Prep/Recv) | 36d | 2012-06-24 | 2012-08-05 | D03G109501C0 |  |  |  |  | 82.03d | 0d | ASSORTED CEILING FINISH [207 h]; Cost |  |  | D03G109905C0 |  |  | DT | C | 03 | G1 | PA | 099 | 05 |  | BILL 5 | B05 | S2 | 01 | R00 | ACF06 |  | 099 |  |  |  |  |  |  | 330 | 958 |  |  |  |  |  |
| D03G121115C0 |  | DT-03 ; 2nd Fix, Inst of Sprinkler droppers (Prep/Recv) | 36d | 2012-06-24 | 2012-08-05 | D03G109501C0 |  |  |  |  | 22.02d | 0d | MECHANICAL [2067.6 h]; Cost |  |  | D03G121115C0 |  |  | DT | C | 03 | G1 | ME | 211 | 15 | 2n | BILL 5 | B05 | S2 | 2F | R00 | ACF07 | MEP | 211 |  |  |  |  |  |  |  |  |  |  |  |  |  |
| D03G123021C0 |  | DT-03 ; 2nd Fix, Inst of Flexible Duct & Plenum boxes (Prep/Recv) | 36d | 2012-06-24 | 2012-08-05 | D03G109205C0, D03G109501C0 |  |  |  |  | 40.02d | 0d | MECHANICAL [274.8 h]; Cost |  |  | D03G123021C0 |  |  | DT | C | 03 | G1 | ME | 230 | 21 | 2n | BILL 5 | B05 | S2 | 2F | R00 | ACF07 | MEP | 230 |  |  |  |  |  |  |  |  |  |  |  |  |  |
| D03G126017C0 |  | DT-03 ; Final Fix, Inst of Ceiling rose (Prep/Recv) | 48d | 2012-06-24 | 2012-08-21 | D03G109501C0 |  |  |  |  | 51.02d | 0d | ELECTRICAL [67.2 h]; Cost |  |  | D03G126017C0 |  |  | DT | C | 03 | G1 | ME | 260 | 17 | FF | BILL 5 | B05 | S2 | FF | R00 | ACF07 | MEP | 260 |  |  |  |  |  |  |  |  |  |  |  |  |  |
| D03G127002C0 |  | DT-03 ; 2nd Fix, Wiring Droppers (Prep/Recv) | 36d | 2012-06-24 | 2012-08-05 | D03G109501C0 |  |  |  |  | 46.02d | 0d | ELECTRICAL [436.8 h]; Cost |  |  | D03G127002C0 |  |  | DT | C | 03 | G1 | ME | 270 | 02 | 2n | BILL 5 | B05 | S2 | 2F | R00 | ACF07 | MEP | 270 |  |  |  |  |  |  |  |  |  |  |  |  |  |
| D03G127020C0 |  | DT-03 ; 2nd Fix, Inst of ELV Equipment (Panels) (Prep/Recv) | 42d | 2012-06-24 | 2012-08-12 | D03G109205C0, D03G109501C0 |  |  |  |  | 22.02d | 0d | ELECTRICAL [1723.2 h]; Cost |  |  | D03G127020C0 |  |  | DT | C | 03 | G1 | ME | 270 | 20 | 2n | BILL 5 | B05 | S2 | 2F | R00 | ACF04 | MEP | 270 |  |  |  |  |  |  |  |  |  |  |  | E |  |
| D03G123019C0 |  | DT-03 ; Final Fix, Inst of Grilles & Diffusers (Prep/Recv) | 60d | 2012-07-01 | 2012-09-11 | D03G109501C0, D03G123021C0 SS+6d |  |  |  |  | 40.02d | 30d | MECHANICAL [2560.8 h]; Cost |  |  | D03G123019C0 |  |  | DT | C | 03 | G1 | ME | 230 | 19 | FF | BILL 5 | B05 | S2 | FF | R00 | ACF07 | MEP | 230 |  |  |  |  |  |  |  |  |  |  |  |  |  |
| D03G127030C0 |  | DT-03 ; Final Fix, Inst of ELV device (Detector/Speaker) (Prep/Recv) | 54d | 2012-07-01 | 2012-09-04 | D03G109501C0, D03G127002C0 SS+6d |  |  |  |  | 46.02d | 36d | ELECTRICAL [2152.8 h]; Cost |  |  | D03G127030C0 |  |  | DT | C | 03 | G1 | ME | 270 | 30 | FF | BILL 5 | B05 | S2 | FF | R00 | ACF07 | MEP | 270 |  |  |  |  |  |  |  |  |  |  |  |  |  |
| D03G126003C0 |  | DT-03 ; Final Fix, Inst of Light fittings (Prep/Recv) | 48d | 2012-07-02 | 2012-08-29 | D03G109501C0, D03G126017C0 SS+7d |  |  |  |  | 51.02d | 41d | ELECTRICAL [6626.4 h]; Cost |  |  | D03G126003C0 |  |  | DT | C | 03 | G1 | ME | 260 | 03 | FF | BILL 5 | B05 | S2 | FF | R00 | ACF07 | MEP | 260 |  |  |  |  |  |  |  |  |  |  |  |  |  |
| D03G106102C0 |  | DT-03 ; Head Wall (Prep/Recv) | 36d | 2012-07-09 | 2012-08-21 | D03CO04415C0, D03G109501C0, DAFWA00111M0, DAFMI22003R02 FS+190d |  |  |  |  | 63.12d | 53.1d | WOOD WORK/CASEWORK [3725 h]; Cost |  |  | D03G106102C0 |  |  | DT | C | 03 | G1 | WO | 061 | 02 |  | BILL 5 | B05 | S2 | WW | R00 | ACF06 |  | 061 |  |  |  |  |  |  | 332 | 960 |  |  |  |  | R3 |
| D03G109903C0 |  | DT-03 ; Wall Final Paint (Prep/Recv) | 36d | 2012-08-05 | 2012-09-18 | D03G109901C0, D03G109905C0 |  |  |  |  | 82.03d | 54d | WALL PAINT [1173 h]; WALL PAINT [1464 m2]; Cost |  |  | D03G109903C0 |  |  | DT | C | 03 | G1 | PA | 099 | 03 |  | BILL 5 | B05 | S2 | 02 | R00 | ACF06 |  | 099 |  |  |  |  |  |  | 329 | 957 |  |  |  |  |  |
| D03G121113C0 |  | DT-03 ; Final Fix, Inst of Sprinklers head/ Extinguisher (Prep/Recv) | 48d | 2012-08-05 | 2012-10-02 | D03G109501C0, D03G121115C0 |  |  |  |  | 22.02d | 12d | MECHANICAL [403.2 h]; Cost |  |  | D03G121113C0 |  |  | DT | C | 03 | G1 | ME | 211 | 13 | FF | BILL 5 | B05 | S2 | FF | R00 | ACF07 | MEP | 211 |  |  |  |  |  |  |  |  |  |  |  |  |  |
| D03G109701C0 |  | DT-03 ; Wall finishes (ST, WD, WC) (Prep/Recv) | 48d | 2012-08-12 | 2012-10-09 | D03G126011C0, D03G127020C0, DAFMI22003R02 FS+170d |  |  |  |  | 22.02d | 0d | ASSORTED WALL FINISH [2334 h]; ASSORTED WALL FINISH [2683 m2]; Cost |  |  | D03G109701C0 |  |  | DT | C | 03 | G1 | WF | 097 | 01 |  | BILL 5 | B05 | S2 | 01 | R00 | ACF06 |  | 097 |  |  |  |  |  |  | 105 | 1002 |  |  |  |  |  |
| D03G106101C0 |  | DT-03 ; Wood / caseworks (Prep/Recv) | 48d | 2012-08-21 | 2012-10-16 | D03CO04415C0, D03G109501C0, D03G109901C0, D03CO04437C0, DAFWA00111M0, CAFWA00113M0, DAFMI22003R02 FS+190d, D03G109305C0, D03G109601C0 |  |  |  |  | 10.03d | 0d | WOOD WORK/CASEWORK [671.13 no]; WOOD WORK/CASEWORK [5627 h]; Cost |  |  | D03G106101C0 |  |  | DT | C | 03 | G1 | WO | 061 | 01 |  | BILL 5 | B05 | S2 | WW | R00 | ACF06 |  | 061 |  |  |  |  |  |  | 332 | 960 |  |  |  |  | R3 |
| D03G108107C0 |  | DT-03 ; Doors (Prep/Recv) | 42d | 2012-08-21 | 2012-10-09 | D03G108103C0, D03G109901C0, D03G109601C0, D03G109305C0, DV10GZ08105R2 FF, DV08P208101R2 FF, DV08P210201R2 FF, GV10GZ08105R2 FF |  |  |  |  | 37.65d | 0d | ASSORTED DOORS [1580 h]; ASSORTED DOORS [158 no]; Cost |  |  | D03G108107C0 |  |  | DT | C | 03 | G1 | DO | 081 | 07 |  | BILL 5 | B05 | S2 | DR | R00 | ACF06 |  | 081 |  |  |  |  |  |  | 317 | 948 |  |  | 08 |  |  |
| D03G122025C0 |  | DT-03 ; Final Fix, Inst of Sanitary Ware (Prep/Recv) | 36d | 2012-08-21 | 2012-10-02 | D03G109205C0, D03G109305C0, A10230 FS+148d |  |  |  |  | 22.02d | 0d | PLUMBING [1917.6 h]; Cost |  |  | D03G122025C0 |  |  | DT | C | 03 | G1 | ME | 220 | 25 | FF | BILL 5 | B05 | S2 | FF | R00 | ACF07 | MEP | 220 |  |  |  |  |  |  |  |  |  |  |  |  |  |
| D03G111005C0 |  | DT-03 ; Utility belt (Prep/Recv) | 24d | 2012-08-28 | 2012-09-25 | D03G106101C0 SS+6d, D03G109205C0 |  |  |  |  | 10.03d | 0d | FF&E [115 h]; FF&E [61.13 no]; Cost |  |  | D03G111005C0 |  |  | DT | C | 03 | G1 | WO | 110 | 05 |  | BILL 5 | B05 | S2 | 05 | R00 | ACF08 |  | e |  |  |  |  |  |  |  |  |  |  |  |  |  |
| D03G122029C0 |  | DT-03 ; Final Fix, Medical Gas pipe (Prep/Recv) | 18d | 2012-09-25 | 2012-10-16 | D03G109501C0, D03G111005C0 |  |  |  |  | 10.03d | 0d | PLUMBING [1616.4 h]; Cost |  |  | D03G122029C0 |  |  | DT | C | 03 | G1 | ME | 220 | 29 | FF | BILL 5 | B05 | S2 | FF | R00 | ACF07 | MEP | 220 |  |  |  |  |  |  |  |  |  |  |  |  |  |
| D03G122021C0 |  | DT-03 ; Final Fix, Terminate Sanitary Ware & Appliances (Prep/Recv) | 36d | 2012-10-02 | 2012-11-17 | D03G122011C0, D03G122025C0 |  |  |  |  | 22.02d | 12d | PLUMBING [1917.6 h]; Cost |  |  | D03G122021C0 |  |  | DT | C | 03 | G1 | ME | 220 | 21 | FF | BILL 5 | B05 | S2 | FF | R00 | ACF07 | MEP | 220 |  |  |  |  |  |  |  |  |  |  |  |  |  |
| D03G108709C0 |  | DT-03 ; Ironmongery (Prep/Recv) | 26.38d | 2012-10-09 | 2012-11-11 | D03G108107C0, DZ9GZ08154R2 FF |  |  |  |  | 37.65d | 27.62d | IRONMONGERY [670 h]; IRONMONGERY [67 no]; Cost |  |  | D03G108709C0 |  |  | DT | C | 03 | G1 | DO | 087 | 09 |  | BILL 5 | B05 | S2 | IM | R00 | ACF06 |  | 087 |  |  |  |  |  |  | 322 | 951 |  |  | 08 |  |  |
| D03G111001C0 |  | DT-03 ; Wall Protection (WP, CG, WG, FCG) (Prep/Recv) | 24d | 2012-10-09 | 2012-11-08 | D03G109701C0, D03G109903C0 SS |  |  |  |  | 40.02d | 30d | FF&E [2826 h]; Cost |  |  | D03G111001C0 |  |  | DT | C | 03 | G1 | WF | 110 | 01 |  | BILL 5 | B05 | S2 | 03 | R00 | ACF08 |  | b |  |  |  |  |  |  | 326 | 1001 |  |  |  |  |  |
| D03G101006C0 |  | DT-03 ; 2nd, Ceiling Inspection by Consultants (Prep/Recv) | 6d | 2012-10-16 | 2012-10-23 | D03G121115C0, D03G123009C0, D03G123015C0, D03G127002C0, D03G109501C0, D03G121113C0, D03G122029C0, D03G123019C0, D03G126003C0, D03G126017C0, D03G127030C0, D03G126015C0 |  |  |  |  | 10.03d | 0d | Labor General [1.2 h]; Cost |  |  | D03G101006C0 |  |  | DT | C | 03 | G1 | ME | 010 | 06 | 2n | BILL 5 | B05 | S2 | CI | R00 | ACF07 | MEP | 010 |  |  |  |  |  |  |  |  |  |  |  |  |  |
| D03G109503C0 |  | DT-03 ; Ceiling closure - ACT/Gypsum (Prep/Recv) | 18d | 2012-10-23 | 2012-11-17 | D03G101006C0, D03G121115C0, D03G126005C0, D03G127001C0, D03G127002C0, DAFOA09505C1 FF, D03G106101C0, D03G109701C0, D03G106102C0, D03G123021C0, D03G126053C0, D03G126007C0 |  |  |  |  | 10.03d | 0d | ASSORTED CEILING FINISH [1168.5 h]; CEILING GYPSUM [161.75 h]; ASSORTED CEILING FINISH [1900 m2]; CEILING GYPSUM [493 m2]; Cost |  |  | D03G109503C0 |  |  | DT | C | 03 | G1 | CE | 095 | 03 |  | BILL 5 | B05 | S2 | 02 | R00 | ACF06 |  | 095 |  |  |  |  |  |  | 324 | 953 |  |  |  |  | R3 |
| D03G109907C0 |  | DT-03 ; Ceiling Final paint (Prep/Recv) | 12d | 2012-11-17 | 2012-12-01 | D03G109601C0, D03G109905C0, D03G109503C0 |  |  |  |  | 22.02d | 12d | ASSORTED CEILING FINISH [113 h]; Cost |  |  | D03G109907C0 |  |  | DT | C | 03 | G1 | PA | 099 | 07 |  | BILL 5 | B05 | S2 | 02 | R00 | ACF06 |  | 099 |  |  |  |  |  |  | 331 | 959 |  |  |  |  |  |
| D03G111003C0 |  | DT-03 ; FF & E (Prep/Recv) | 12d | 2012-11-17 | 2012-12-01 | D03G109601C0, D03G109503C0 |  |  |  |  | 22.02d | 12d | FF&E [83 h]; FF&E [43.86 no]; Cost |  |  | D03G111003C0 |  |  | DT | C | 03 | G1 | WO | 110 | 03 |  | BILL 5 | B05 | S2 | 04 | R00 | ACF08 |  | a |  |  |  |  |  |  | 333 | 961 |  |  |  |  |  |
| D03G122027C0 |  | DT-03 ; Final Fix, Inst of All drain (Prep/Recv) | 12d | 2012-11-17 | 2012-12-01 | D03G109305C0, D03G109503C0 |  |  |  |  | 10.03d | 0d | PLUMBING [1173.6 h]; Cost |  |  | D03G122027C0 |  |  | DT | C | 03 | G1 | ME | 220 | 27 | FF | BILL 5 | B05 | S2 | FF | R00 | ACF07 | MEP | 220 |  |  |  |  |  |  |  |  |  |  |  |  |  |
| D03G126019C0 |  | DT-03 ; Final Fix, Inst of Switch/Sockets (Prep/Recv) | 12d | 2012-11-17 | 2012-12-01 | D03G109901C0, D03G109503C0 |  |  |  |  | 10.03d | 0d | ELECTRICAL [610.8 h]; Cost |  |  | D03G126019C0 |  |  | DT | C | 03 | G1 | ME | 260 | 19 | FF | BILL 5 | B05 | S2 | FF | R00 | ACF07 | MEP | 260 |  |  |  |  |  |  |  |  |  |  |  |  |  |

| ID | WBS | Activity | Duration | Start | Finish | Predecessors | Complete | Remaining | Planned start | Planned finish | Total float | Free float | Calendar | Resources | Cost | Actual cost | change id | CCAD BUILDING(SET) | CCAD PHASE(SET) | CCAD FLOOR(SET) | CCAD ZONE(SET) | CCAD WORK(SET) | CCAD SECTION(SET) | CCAD SERIAL No.(SET) | CCAD CBS(SET) | CCAD BILL(SET) | CCAD HANDOVER(SET) | CCAD TAG(SET) | CCAD REV(SET) | CCADACF (SET) | CCAD SSCF | Change Order # | NEW ACTIVITY ID | RENZ % COMPLETE | Claimed This Month | P_811 | P_711 | CCAD CSA | Act Selector % | user_number8 | user_integer1 | user_integer2 | user_number7 | July2011 Target% Complete | CCAD SUB ZONE MEP(SET) | CCAD MEQ | PERCENT COMPLETE | CCAD DIVISION(SET) | IDDD |
| --- | --- | --- | --- | --- | --- | --- | --- | --- | --- | --- | --- | --- | --- | --- | --- | --- | --- | --- | --- | --- | --- | --- | --- | --- | --- | --- | --- | --- | --- | --- | --- | --- | --- | --- | --- | --- | --- | --- | --- | --- | --- | --- | --- | --- | --- | --- | --- | --- | --- |
|  | 10 | **Precommissioning Tesing & snagging (Gen Or, Pat Hold, Prev/Recv)** |  | 2012-12-01 | 2013-01-13 |  |  |  |  |  |  |  |  |  |  |  |  |  |  |  |  |  |  |  |  |  |  |  |  |  |  |  |  |  |  |  |  |  |  |  |  |  |  |  |  |  |  |  |  |
| D03TS01801C0 |  | DT-03 ; MEP de-snag, FIREM sign-off | 12d | 2012-12-01 | 2012-12-16 | D03G122025C0, D03G122027C0, D03G126015C0, D03G122021C0, D03G121113C0, D03G123019C0, D03G122029C0, D03G126017C0, D03G126003C0, D03G127030C0, D03G126019C0, D03G111005C0 |  |  |  |  | 10.03d | 0d |  | TESTING & COMMISSIONING [2549 h]; Cost |  |  | D03TS01801C0 | DT | C | 03 | TS | SC | 018 | 01 | BILL 5 | B05 | S2 | 01 | R00 | ACF07 | 018 |  |  |  |  |  |  |  |  |  |  |  |  |  |  |  |  |  |  |
| D03TS01808C0 |  | DT-03 ; Touch-up & Clean / JV inspection /CIR /De-snag | 17.88d | 2012-12-16 | 2013-01-06 | D03G106101C0, D03G106102C0, D03G108709C0, D03G109305C0, D03G109601C0, D03G109701C0, D03G109903C0, D03G109907C0, D03G111001C0, D03G111003C0, D03TS01801C0, D03G105501C0, D03G109503C0 |  |  |  |  | 10.03d | 0d |  | TESTING & COMMISSIONING [213 h]; Cost |  |  | D03TS01802C0 | DT | C | 03 | TS | SC | 018 | 02 | BILL 5 | B05 | S2 | 02 | R00 | ACF07 | 018 |  |  |  |  |  |  |  |  |  |  |  |  |  |  |  |  |  |  |
| D03TS01813C0 |  | DT-03 ; Consultant's final de-snag inspection | 7d | 2013-01-06 | 2013-01-13 | D03TS01808C0 |  |  |  |  | 11.03d | 0d | R00-C02, Calendar day | Labor General [1 h]; Cost |  |  | D03TS01803C0 | DT | C | 03 | TS | SC | 018 | 03 | BILL 5 | B05 | S2 | 03 | R00 | ACF07 | 018 |  |  |  |  |  |  |  |  |  |  |  |  |  |  |  |  |  |  |
|  | 07 | **TR Room** |  | 2011-05-15 | 2012-07-08 |  |  |  |  |  |  |  |  |  |  |  |  |  |  |  |  |  |  |  |  |  |  |  |  |  |  |  |  |  |  |  |  |  |  |  |  |  |  |  |  |  |  |  |  |
| D03TR09201C0 |  | DT-03 ; Metal Studs (TR RM) | 90d | 2011-05-15 A | 2011-09-29 A | D03PA09201C0 SS | 100% |  | 2011-06-18 | 2011-10-03 |  |  |  | PARTITIONS [779 h]; PARTITIONS - Metal Studs [105 m]; Cost |  |  | D03TR09201C0 | DT | C | 03 | TR | PT | 092 | 01 | BILL 5 | B05 | S2 | 1F | R00 | ACF06 | 092 | 313 | 885 | 30 | 15234.66 | 90 | 66 | GP | PMS |  |  |  |  |  |  |  |  |  |  |
| D03TR09203C0 |  | DT-03 ; Partitions 1st face (TR RM) | 60d | 2011-05-15 A | 2011-11-14 | D03TR09201C0 SS+12d | 70% | 18d | 2011-07-03 | 2011-09-12 | 43d | 24d |  | PARTITIONS [105 m]; PARTITIONS [612 h]; Cost |  |  | D03TR09203C0 | DT | C | 03 | TR | PT | 092 | 03 | BILL 5 | B05 | S2 | 2F | R00 | ACF06 | 092 | 314 | 886 | 5 | 7820.46 | 50 | 27 | GP | P1F | 0 | 0 | 0 | 0 |  |  |  |  |  |  |
| D03TR26005C0 |  | DT-03 ; 2nd Fix, Wiring for Power/Lighting/Emergency (TR RM) | 36d | 2011-06-16 A | 2012-03-22 | D03TR26026C0, D03TR09501C0 | 20% | 28.8d | 2011-08-23 | 2011-10-05 | 26.2d | 7.2d |  | ELECTRICAL [436.8 h]; Cost [21894.9 AED] | 21,894.91 | 4,378.98 | D03TR26005C0 | DT | C | 03 | TR | ME | 260 | 05 | BILL 5 | B05 | S2 | 2F | R00 | ACF07 | 260 |  |  |  | 7737.8 |  |  | MEP |  |  |  |  |  | 35 | 2n |  |  |  |  |
| D03TR26009C0 |  | DT-03 ; 2nd Fix, Inst of Equipment (DB, TR, SG,BUS) (TR RM) | 60d | 2011-07-04 A | 2012-02-28 | D03TR09205C0 | 25% | 45d | 2011-10-18 | 2012-01-02 | 46d | 0d |  | ELECTRICAL [14310 h]; Cost [3256347 AED] | 3,256,347.19 | 814,086.8 | D03TR26009C0 | DT | C | 03 | TR | ME | 260 | 09 | BILL 5 | B05 | S2 | 2F | R00 | ACF04 | 260 |  |  |  |  | 20 | 10 | MEP |  | 0 | 0 | 0 | 0 |  | 2n | E |  |  |  |
| D03TR23009C0 |  | DT-03 ; 2nd Fix, Inst of VAV'S CHW connection (TR RM) | 30d | 2011-09-05 A | 2012-02-09 | D03TR09205C0 | 5% | 28.5d | 2012-03-01 | 2012-04-04 | 29.5d | 0d |  | MECHANICAL [1684.8 h]; Cost [91006.1 AED] | 91,006.06 | 4,550.3 | D03TR23009C0 | DT | C | 03 | TR | ME | 230 | 09 | BILL 5 | B05 | S2 | 2F | R00 | ACF07 | 230 |  |  |  |  |  |  | MEP |  |  |  |  |  | 15 | 2n |  | 5 |  |  |
| D03TR23011C0 |  | DT-03 ; 2nd Fix, Inst of VCD's/FD's (TR RM) | 30d | 2011-09-05 A | 2012-02-09 | D03TR09205C0 | 5% | 28.5d | 2012-03-01 | 2012-04-04 | 29.5d | 0d |  | MECHANICAL [4312.8 h]; Cost [232964 AED] | 232,964.23 | 11,648.21 | D03TR23011C0 | DT | C | 03 | TR | ME | 230 | 11 | BILL 5 | B05 | S2 | 2F | R00 | ACF07 | 230 |  |  |  |  |  |  | MEP |  |  |  |  |  | 15 | 2n |  |  |  |  |
| D03TR23013C0 |  | DT-03 ; 2nd Fix, Insulation of CHW pipe & Duct (TR RM) | 30d | 2011-09-05 A | 2012-03-05 | D03TR23009C0, D03TR23011C0 | 30% | 21d | 2012-04-05 | 2012-05-09 | 29.5d | 4.5d |  | MECHANICAL [5311.2 h]; Cost [286617 AED] | 286,617.06 | 85,985.12 | D03TR23013C0 | DT | C | 03 | TR | ME | 230 | 13 | BILL 5 | B05 | S2 | 2F | R00 | ACF07 | 230 |  |  |  |  |  |  | MEP |  |  |  |  |  | 60 | 2n |  |  |  |  |
| D03TR26026C0 |  | DT-03 ; 2nd Fix, Conduit (TR RM) | 30d | 2011-10-22 | 2011-11-29 | D03TR09201C0 SS+6d |  |  |  |  | 19d | 0d |  | ELECTRICAL [824.4 h]; Cost |  |  | D03TR26026C0 | DT | C | 03 | TR | ME | 260 | 26 | BILL 5 | B05 | S2 | 2F | R00 | ACF07 | 260 |  |  |  |  |  |  | MEP |  |  |  |  |  | 15 | 2n |  |  |  |  |
| D03TR08101C0 |  | DT-03 ; Door Frames (TR RM) | 18d | 2011-11-27 | 2011-12-18 | D03TR09201C0, GNHE08101C0 FS+93d |  |  |  |  | 34d | 15d |  | ASSORTED DOORS [75 h]; Cost |  |  | D03TR08101C0 | DT | C | 03 | TR | DO | 081 | 01 | BILL 5 | B05 | S2 | DF | R00 | ACF06 | 081 | 316 | 20001090 |  |  |  |  |  |  |  |  |  |  |  |  |  |  | 08 |  |
| D03TR01005C0 |  | DT-03 ; 2nd, Wall Inspection by Consultant (TR RM) | 12d | 2011-11-30 | 2011-12-14 | D03TR26026C0 |  |  |  |  | 19d | 0d |  | Labor General [1.2 h]; Cost |  |  | D03TR01005C0 | DT | C | 03 | TR | ME | 010 | 05 | BILL 5 | B05 | S2 | WI | R00 | ACF07 | 010 |  |  |  |  |  |  | MEP |  |  |  |  |  | 15 | 2n |  |  |  |  |
| D03TR09205C0 |  | DT-03 ; Partitions Closing (TR RM) | 18d | 2011-12-15 | 2012-01-05 | D03TR01005C0, D03TR09201C0, D03TR09203C0, DAFOA09206C1 FF, D03TR08101C0 FF |  |  |  |  | 19d | 0d |  | PARTITIONS [105 m]; PARTITIONS [796 h]; Cost |  |  | D03TR09205C0 | DT | C | 03 | TR | PT | 092 | 05 | BILL 5 | B05 | S2 | FF | R00 | ACF06 | 092 | 315 | 887 |  |  |  |  | GP | P2F |  |  |  |  |  |  |  |  |  |  |
| D03TR09901C0 |  | DT-03 ; Wall Prime & 1st coat (TR RM) | 18d | 2012-01-07 | 2012-01-26 | D03TR09205C0 |  |  |  |  | 19d | 0d |  | WALL PAINT [218 h]; WALL PAINT [272 m2]; Cost |  |  | D03TR09901C0 | DT | C | 03 | TR | PA | 099 | 01 | BILL 5 | B05 | S2 | 01 | R00 | ACF06 | 099 | 360 | 20001110 |  |  |  |  |  |  |  |  |  |  |  |  |  |  |  |  |
| D03TR26007C0 |  | DT-03 ; 2nd Fix, Cable Pulling (TR RM) | 30d | 2012-01-07 | 2012-02-11 | D03TR09203C0, D03TR09205C0 |  |  |  |  | 49d | 24d |  | ELECTRICAL [6634.8 h]; Cost |  |  | D03TR26007C0 | DT | C | 03 | TR | ME | 260 | 07 | BILL 5 | B05 | S2 | 2F | R00 | ACF07 | 260 |  |  |  |  |  |  | MEP |  |  |  |  |  |  | 2n |  |  |  |  |
| D03TR26013C0 |  | DT-03 ; Final Fix, Termination & Gladding of Cables (TR RM) | 18d | 2012-01-07 | 2012-01-26 | D03TR26009C0 SS |  |  |  |  | 61d | 36d |  | ELECTRICAL [368.4 h]; Cost |  |  | D03TR26013C0 | DT | C | 03 | TR | ME | 260 | 13 | BILL 5 | B05 | S2 | FF | R00 | ACF07 | 260 |  |  |  |  |  |  | MEP |  |  |  |  |  |  | FF |  |  |  |  |
| D03TR26027C0 |  | DT-03 ; 2nd Fix, Wiring / Cabling (TR RM) | 30d | 2012-01-07 | 2012-02-11 | D03TR09205C0 |  |  |  |  | 61d | 42d |  | ELECTRICAL [436.8 h]; Cost |  |  | D03TR26027C0 | DT | C | 03 | TR | ME | 260 | 27 | BILL 5 | B05 | S2 | 2F | R00 | ACF07 | 260 | 417 | 1318 |  |  |  |  | MEP |  |  |  |  |  | 25 | 2n |  |  |  |  |
| D03TR09501C0 |  | DT-03 ; Ceiling Grid and Service Tile (TR RM) | 18d | 2012-01-28 | 2012-02-18 | D03TR09205C0, D03TR09901C0 |  |  |  |  | 19d | 0d |  | CEILING GRID FOR GYPSUM [443.17 h]; CEILING GRID FOR GYPSUM [37.95 m2]; Cost |  |  | D03TR09501C0 | DT | C | 03 | TR | CE | 095 | 01 | BILL 5 | B05 | S2 | 01 | R00 | ACF06 | 095 | 336 | 1327 |  |  |  |  |  |  |  |  |  |  |  |  |  |  |  | 1 |
| D03TR09903C0 |  | DT-03 ; Wall - Final Paint (TR RM) | 12d | 2012-01-28 | 2012-02-11 | D03TR09901C0 |  |  |  |  | 109d | 90d |  | WALL PAINT [117 h]; WALL PAINT [146 m2]; Cost |  |  | D03TR09903C0 | DT | C | 03 | TR | PA | 099 | 03 | BILL 5 | B05 | S2 | 02 | R00 | ACF06 | 099 | 361 | 1312 |  |  |  |  |  |  |  |  |  |  |  |  |  |  |  |  |
| D03TR09601C0 |  | DT-03 ; Floor Finishes (TR RM) | 18d | 2012-02-19 | 2012-03-10 | D03TR09501C0 |  |  |  |  | 19d | 0d |  | ASSORTED FLOOR FINISH [1744 h]; ASSORTED FLOOR FINISH [968 m2]; Cost |  |  | D03TR09601C0 | DT | C | 03 | TR | FF | 096 | 01 | BILL 5 | B05 | S2 | 01 | R00 | ACF06 | FF | 359 | 20001120 |  |  |  |  |  |  |  |  |  |  |  |  |  |  |  |  |
| D03TR09905C0 |  | DT-03 ; Ceiling Prime & 1st coat (TR RM) | 18d | 2012-02-19 | 2012-03-10 | D03TR09501C0 |  |  |  |  | 73d | 36d |  | ASSORTED CEILING FINISH [17 h]; Cost |  |  | D03TR09905C0 | DT | C | 03 | TR | PA | 099 | 05 | BILL 5 | B05 | S2 | 01 | R00 | ACF06 | 099 | 362 | 1313 |  |  |  |  |  |  |  |  |  |  |  |  |  |  |  |  |
| D03TR23003C0 |  | DT-03 ; Final Fix, Inst of Grilles & Diffusers (TR RM) | 18d | 2012-02-19 | 2012-03-10 | D03TR09501C0 |  |  |  |  | 25d | 0d |  | MECHANICAL [2560.8 h]; Cost |  |  | D03TR23003C0 | DT | C | 03 | TR | ME | 230 | 03 | BILL 5 | B05 | S2 | FF | R00 | ACF07 | 230 |  |  |  |  |  |  | MEP |  |  |  |  |  |  | FF |  |  |  |  |
| D03TR23023C0 |  | DT-03 ; 2nd Fix, Flexible ducts (TR RM) | 18d | 2012-02-19 | 2012-03-10 | D03TR09205C0, D03TR09501C0 |  |  |  |  | 37d | 18d |  | MECHANICAL [274.8 h]; Cost |  |  | D03TR23023C0 | DT | C | 03 | TR | ME | 230 | 23 | BILL 5 | B05 | S2 | 2F | R00 | ACF07 | 230 | 412 | 20001140 |  |  |  |  | MEP |  |  |  |  |  |  | 2n |  |  |  |  |
| D03TR23074C0 |  | DT-03 ; Final Fix, Grilles, panels & diffusers (TR RM) | 18d | 2012-02-19 | 2012-03-10 | D03TR09501C0 |  |  |  |  | 25d | 0d |  | MECHANICAL [2560.8 h]; Cost |  |  | D03TR23074C0 | DT | C | 03 | TR | ME | 230 | 74 | BILL 5 | B05 | S2 | FF | R00 | ACF07 | 230 | 419 | 20001160 |  |  |  |  | MEP |  |  |  |  |  |  | FF |  |  |  |  |
| D03TR26015C0 |  | DT-03 ; Final Fix, Inst of Ceiling rose (TR RM) | 18d | 2012-02-19 | 2012-03-10 | D03TR09501C0 |  |  |  |  | 25d | 0d |  | ELECTRICAL [67.2 h]; Cost |  |  | D03TR26015C0 | DT | C | 03 | TR | ME | 260 | 15 | BILL 5 | B05 | S2 | FF | R00 | ACF07 | 260 |  |  |  |  |  |  | MEP |  |  |  |  |  |  | FF |  |  |  |  |
| D03TR26019C0 |  | DT-03 ; Final Fix, Inst of Light fittings (TR RM) | 18d | 2012-02-19 | 2012-03-10 | D03TR09501C0 |  |  |  |  | 25d | 0d |  | ELECTRICAL [6626.4 h]; Cost |  |  | D03TR26019C0 | DT | C | 03 | TR | ME | 260 | 19 | BILL 5 | B05 | S2 | FF | R00 | ACF07 | 260 |  |  |  |  |  |  | MEP |  |  |  |  |  |  | FF |  |  |  |  |
| D03TR26076C0 |  | DT-03 ; Final Fix, Lighting fittings (TR RM) | 18d | 2012-02-19 | 2012-03-10 | D03TR09501C0 |  |  |  |  | 25d | 0d |  | ELECTRICAL [6626.4 h]; Cost |  |  | D03TR26076C0 | DT | C | 03 | TR | ME | 260 | 76 | BILL 5 | B05 | S2 | FF | R00 | ACF07 | 260 | 420 | 20001170 |  |  |  |  | MEP |  |  |  |  |  |  | FF |  |  |  |  |
| D03TR27002C0 |  | DT-03 ; 2nd Fix, Dressing of ELV panels (TR RM) | 24d | 2012-02-19 | 2012-03-17 | D03TR09205C0, D03TR27020C0 SS |  |  |  |  | 25d | 0d |  | ELECTRICAL [333.6 h]; Cost |  |  | D03TR27002C0 | DT | C | 03 | TR | ME | 270 | 02 | BILL 5 | B05 | S2 | 2F | R00 | ACF07 | 270 |  |  |  |  |  |  | MEP |  |  |  |  |  | 25 | 2n |  |  |  |  |
| D03TR27020C0 |  | DT-03 ; 2nd Fix, Inst of ELV Equipment (Panels) (TR RM) | 24d | 2012-02-19 | 2012-03-17 | D03TR09205C0, D03TR09501C0 |  |  |  |  | 25d | 0d |  | ELECTRICAL [1723.2 h]; Cost |  |  | D03TR27020C0 | DT | C | 03 | TR | ME | 270 | 20 | BILL 5 | B05 | S2 | 2F | R00 | ACF04 | 270 |  |  |  |  |  |  | MEP |  |  |  |  |  | 25 | 2n | E |  |  |  |
| D03TR27030C0 |  | DT-03 ; Final Fix, Inst of ELV device (Detector/Speaker) (TR RM) | 18d | 2012-02-19 | 2012-03-10 | D03TR27002C0 SS |  |  |  |  | 25d | 0d |  | ELECTRICAL [2152.8 h]; Cost |  |  | D03TR27030C0 | DT | C | 03 | TR | ME | 270 | 30 | BILL 5 | B05 | S2 | FF | R00 | ACF07 | 270 |  |  |  |  |  |  | MEP |  |  |  |  |  |  | FF |  |  |  |  |
| D03TR01006C0 |  | DT-03 ; 2nd, Ceiling Inspection by Consultants (TR RM) | 12d | 2012-03-11 | 2012-03-24 | D03TR23009C0, D03TR23011C0, D03TR23013C0, D03TR26007C0, D03TR09501C0, D03TR23003C0, D03TR23074C0, D03TR26015C0, D03TR26019C0, D03TR26076C0, D03TR27030C0, D03TR26013C0 |  |  |  |  | 25d | 6d |  | Labor General [1.2 h]; Cost |  |  | D03TR01006C0 | DT | C | 03 | TR | ME | 010 | 06 | BILL 5 | B05 | S2 | CI | R00 | ACF07 | 010 |  |  |  |  |  |  | MEP |  |  |  |  |  |  | 2n |  |  |  |  |
| D03TR08105C0 |  | DT-03 ; Doors (TR RM) | 19d | 2012-03-11 | 2012-04-01 | D03TR08101C0, D03TR09901C0, D03TR09601C0 |  |  |  |  | 50d | 0d |  | ASSORTED DOORS [120 h]; ASSORTED DOORS [12 no]; Cost |  |  | D03TR08105C0 | DT | C | 03 | TR | DO | 081 | 05 | BILL 5 | B05 | S2 | DR | R00 | ACF06 | 081 | 317 | 1325 |  |  |  |  |  |  |  |  |  |  |  |  |  |  | 08 |  |
| D03TR21115C0 |  | DT-03 ; 2nd Fix, Gaseous Fire Suppression (TR RM) | 18d | 2012-03-11 | 2012-03-31 | D03TR09601C0 |  |  |  |  | 19d | 0d |  | MECHANICAL [12560.4 h]; Cost |  |  | D03TR21115C0 | DT | C | 03 | TR | ME | 211 | 15 | BILL 5 | B05 | S2 | 2F | R00 | ACF07 | 211 | 411 | 20001130 |  |  |  |  | MEP |  |  |  |  |  |  | 2n |  |  |  |  |
| D03TR09503C0 |  | DT-03 ; Ceiling closure (TR RM) | 18d | 2012-04-01 | 2012-04-21 | D03TR01006C0, D03TR21115C0, D03TR26005C0, D03TR26007C0, D03TR26026C0, D03TR26027C0, D03TR27002C0, D03TR26009C0, D03TR23023C0 |  |  |  |  | 19d | 0d |  | ASSORTED CEILING FINISH [89.79 h]; CEILING GYPSUM [12.51 h]; ASSORTED CEILING FINISH [146 m2]; CEILING GYPSUM [38 m2]; Cost |  |  | D03TR09503C0 | DT | C | 03 | TR | CE | 095 | 03 | BILL 5 | B05 | S2 | 02 | R00 | ACF06 | 095 | 337 | 20001080 |  |  |  |  |  |  |  |  |  |  |  |  |  |  |  |  |
| D03TR08709C0 |  | DT-03 ; Ironmongery (TR RM) | 16d | 2012-04-02 | 2012-04-19 | D03TR08105C0 |  |  |  |  | 50d | 31d |  | IRONMONGERY [50 h]; IRONMONGERY [5 no]; Cost |  |  | D03TR08709C0 | DT | C | 03 | TR | DO | 087 | 09 | BILL 5 | B05 | S2 | IM | R00 | ACF06 | 087 | 322 | 20001100 |  |  |  |  |  |  |  |  |  |  |  |  |  |  | 08 |  |
| D03TR09907C0 |  | DT-03 ; Ceiling - Final paint (TR RM) | 12d | 2012-04-22 | 2012-05-05 | D03TR09905C0, D03TR09503C0 |  |  |  |  | 37d | 18d |  | ASSORTED CEILING FINISH [9 h]; Cost |  |  | D03TR09907C0 | DT | C | 03 | TR | PA | 099 | 07 | BILL 5 | B05 | S2 | 02 | R00 | ACF06 | 099 | 363 | 1314 |  |  |  |  |  |  |  |  |  |  |  |  |  |  |  |  |
| D03TR26017C0 |  | DT-03 ; Final Fix, Inst of Switch/Sockets (TR RM) | 12d | 2012-04-22 | 2012-05-05 | D03TR09901C0, D03TR09503C0 |  |  |  |  | 19d | 0d |  | ELECTRICAL [610.8 h]; Cost |  |  | D03TR26017C0 | DT | C | 03 | TR | ME | 260 | 17 | BILL 5 | B05 | S2 | FF | R00 | ACF07 | 260 |  |  |  |  |  |  | MEP |  |  |  |  |  |  | FF |  |  |  |  |
| D03TR01802C0 |  | DT-03 ; MEP de-snag, FIREM sign-off | 18d | 2012-05-06 | 2012-05-26 | D03TR26017C0, D03TR23074C0, D03TR23003C0, D03TR26076C0, D03TR26013C0, D03TR26015C0, D03TR26019C0, D03TR27030C0 |  |  |  |  | 19d | 0d |  | TESTING & COMMISSIONING [510 h]; Cost |  |  | CP3TR01851C0 | DT | C | 03 | TR | SC | 018 | 53 | BILL 5 | B05 | S2 | 01 | R00 | ACF07 | 018 | 396 |  |  |  |  |  |  |  |  |  |  |  |  |  |  |  |  |  |
| D03TR01801C0 |  | DT-03 ; Touch-up & Clean / JV inspection /CIR /De-snag | 24d | 2012-05-27 | 2012-06-24 | D03TR01802C0, D03TR08709C0, D03TR09601C0, D03TR09903C0, D03TR09907C0, D03TR09503C0 |  |  |  |  | 19d | 0d |  | TESTING & COMMISSIONING [85 h]; Cost |  |  | D03TR01851C0 | DT | C | 03 | TR | SC | 018 | 51 | BILL 5 | B05 | S2 | 02 | R00 | ACF07 | 018 | 396 |  |  |  |  |  |  |  |  |  |  |  |  |  |  |  |  |  |
| D03TR01803C0 |  | DT-03 ; Consultant's final de-snag inspection | 12d | 2012-06-25 | 2012-07-08 | D03TR01801C0 |  |  |  |  | 19d | 7.2d |  | Labor General [1 h]; Cost |  |  | CP3TS01803C0 | DT | C | 03 | TR | SC | 018 | 03 | BILL 5 | B05 | S1 | 03 | R00 | ACF07 | 018 |  |  |  |  |  |  |  |  |  |  |  |  |  |  |  |  |  |  |

| ID | WBS | Activity | Duration | Start | Finish | Predecessors | Complete | Remaining | Planned start | Planned finish | Total float | Free float | Resources | Cost | Actual cost | change id | RENZ % COMPLETE | PERCENT COMPLETE | July2011 Target% Complete | Claimed This Month | CCAD BUILDING(SET) | CCAD PHASE(SET) | CCAD FLOOR(SET) | CCAD ZONE(SET) | CCAD WORK(SET) | CCAD SECTION(SET) | CCAD SERIAL No.(SET) | CCAD SUB ZONE MEP(SET) | CCAD CBS(SET) | CCAD BILL(SET) | CCAD HANDOVER(SET) | CCAD TAG(SET) | CCAD REV(SET) | CCADACF (SET) | CCAD CSA | CCAD SSCF | Act Selector % | user_number8 | user_integer1 | user_integer2 | user_number7 | Change Order # | NEW ACTIVITY ID | P_811 | P_711 | CCAD DIVISION(SET) | CCAD MEQ | R3 Finish |
| --- | --- | --- | --- | --- | --- | --- | --- | --- | --- | --- | --- | --- | --- | --- | --- | --- | --- | --- | --- | --- | --- | --- | --- | --- | --- | --- | --- | --- | --- | --- | --- | --- | --- | --- | --- | --- | --- | --- | --- | --- | --- | --- | --- | --- | --- | --- | --- | --- |
|  | 03 | **Gen Or, Pat Hold, Prev/Recv -1** |  | 2011-03-14 | 2013-01-07 |  |  |  |  |  |  |  |  |  |  |  |  |  |  |  |  |  |  |  |  |  |  |  |  |  |  |  |  |  |  |  |  |  |  |  |  |  |  |  |  |  |  |  |
| D03G221111C0 |  | DT-03 ; 1st Fix, Inst of Sprinkler main pipe (Prep/Recv-1) | 250d | 2011-03-14 A | 2011-10-29 | D03G222019C0 SS+10d, D03G223001C0 | 90% | 25d | 2011-05-10 | 2012-03-07 | 73.12d | 40.7d | MECHANICAL [981.6 h]; Cost [53543.7 AED] | 53,543.69 | 48,189.32 | D03G221111C0 | 60 | 90 | 98 | 15535.25 | DT | C | 03 | G2 | ME | 211 | 11 | 1S | BILL 5 | B05 | S2 | 1F | R00 | ACF04 | MEP | 211 | M1F |  |  |  |  |  |  |  |  |  |  |  |
| D03G222019C0 |  | DT-03 ; 1st Fix, Inst of Drainage pipe (ceiling) (Prep/Recv-1) | 250d | 2011-03-14 A | 2011-10-05 | D03G223001C0, D03G226001C0 SS | 98% | 5d | 2011-04-28 | 2012-02-25 | 73.12d | 0d | PLUMBING [1173.6 h]; Cost [61888.2 AED] | 61,888.15 | 60,650.39 | D03G222019C0 | 60 |  | 98 | 18375.5 | DT | C | 03 | G2 | ME | 220 | 19 | 1S | BILL 5 | B05 | S2 | 1F | R00 | ACF04 | MEP | 220 | M1F |  |  |  |  |  |  |  |  |  |  |  |
| D03G223001C0 |  | DT-03 ; 1st Fix, Inst. of Supports for MEP (Prep/Recv-1) | 27d | 2011-04-07 A | 2011-06-01 A | D03S107807C0 SS, D03S207807C0 SS | 100% |  | 2011-03-28 | 2011-04-27 |  |  | MECHANICAL [1338 h]; Cost [75432.9 AED] | 75,432.94 | 75,432.94 | D03G223001C0 | 95 |  |  | 4375.11 | DT | C | 03 | G2 | ME | 230 | 01 | 1S | BILL 5 | B05 | S2 | 1F | R00 | ACF04 | MEP | 230 | M1F |  |  |  |  |  |  |  |  |  |  |  |
| D03G221117C0 |  | DT-03 ; 1st Fix, Inst of Sprinkler branch pipe (Prep/Recv-1) | 250d | 2011-04-12 A | 2012-01-29 | D03G209201C0, D03G221111C0, D03G205503C0 FF+18d | 90% | 25d | 2011-08-18 | 2012-06-14 | 25.73d | 11.7d | MECHANICAL [1441.2 h]; Cost [78749.8 AED] | 78,749.79 | 70,874.81 | D03G221117C0 | 95 | 90 | 95 | -9129.1 | DT | C | 03 | G2 | ME | 211 | 17 | 1S | BILL 5 | B05 | S2 | 1F | R00 | ACF04 | MEP | 211 | M1F |  |  |  |  |  |  |  |  |  |  |  |
| D03G226005C0 |  | DT-03 ; 2nd Fix, Wiring for Power/Lighting/Emergency (Prep/Recv-1) | 60d | 2011-04-25 A | 2012-06-04 | D03G209205C0 | 30% | 42d | 2011-12-13 | 2012-02-22 | 74.03d | 0d | ELECTRICAL [436.8 h]; Cost [21894.9 AED] | 21,894.91 | 6,568.47 | D03G226005C0 | 5 |  | 40 | 6448.27 | DT | C | 03 | G2 | ME | 260 | 05 | 2n | BILL 5 | B05 | S2 | 2F | R00 | ACF07 | MEP | 260 |  |  |  |  |  |  |  |  |  |  |  |  |
| D03G222005C0 |  | DT-03 ; 1st Fix, Inst of Water supply pipe (ceiling) (Prep/Recv-1) | 90d | 2011-05-03 A | 2011-11-14 | D03G222019C0 SS+14d, D03G223001C0 | 60% | 36d | 2011-06-02 | 2011-09-19 | 81.12d | 0d | PLUMBING [4896 h]; Cost [264473 AED] | 264,473.49 | 158,684.09 | D03G222005C0 | 50 |  | 85 |  | DT | C | 03 | G2 | ME | 220 | 05 | 1S | BILL 5 | B05 | S2 | 1F | R00 | ACF04 | MEP | 220 | M1F |  |  |  |  |  |  |  |  |  |  |  |
| D03G209201C0 |  | DT-03 ; Metal Studs (Prep/Recv-1) | 90d | 2011-05-15 A | 2011-12-14 | D03G109201C0 SS+6d, D03G223001C0, D03PA09201C0 | 77% | 20.7d | 2011-06-25 | 2011-10-10 | 14.03d | 0d | PARTITIONS [10306 h]; PARTITIONS - Metal Studs [1392 m]; Cost |  |  | D03G209201C0 | 15 |  |  | 297076 | DT | C | 03 | G2 | PT | 092 | 01 |  | BILL 5 | B05 | S2 | 1F | R00 | ACF06 | GP | 092 | PMS | 0 | 0 | 0 | 0 | 313 | 944 | 70 | 66 |  |  |  |
| D03G209203C0 |  | DT-03 ; Partitions 1st face (Prep/Recv-1) | 90d | 2011-05-15 A | 2011-12-21 | D03G209201C0 SS+12d, D03G221111C0 FF, D03G226013C0 FF | 70% | 27d | 2011-07-10 | 2011-10-24 | 57.42d | 43.4d | PARTITIONS [1392 m]; PARTITIONS [8059 h]; Cost |  |  | D03G209203C0 | 5 |  |  | 101666.01 | DT | C | 03 | G2 | PT | 092 | 03 |  | BILL 5 | B05 | S2 | 2F | R00 | ACF06 | GP | 092 | P1F | 0 | 0 | 0 | 0 | 314 | 945 | 50 | 27 |  |  |  |
| D03G223017C0 |  | DT-03 ; 1st Fix, Inst of CHW pipe (Prep/Recv-1) | 180d | 2011-05-15 A | 2012-01-29 | D03G221111C0 SS+10d, D03G223001C0, D03G205503C0 FF+18d | 85% | 27d | 2011-06-02 | 2012-01-09 | 14.03d | 0d | MECHANICAL [6325.2 h]; Cost [345418 AED] | 345,418.28 | 293,605.54 | D03G223017C0 | 35 |  | 85 | 20032.61 | DT | C | 03 | G2 | ME | 230 | 17 | 1S | BILL 5 | B05 | S2 | 1F | R00 | ACF04 | MEP | 230 | M1F |  |  |  |  |  |  |  |  |  |  |  |
| D03G223023C0 |  | DT-03 ; 1st Fix, Inst of Main Ducting (Prep/Recv-1) | 150d | 2011-05-15 A | 2012-02-01 | D03G223001C0, D03G223017C0 SS+7d | 80% | 30d | 2011-06-11 | 2011-12-12 | 14.03d | 0d | MECHANICAL [11402.4 h]; Cost [622619 AED] | 622,619.08 | 498,095.27 | D03G223023C0 | 40 |  | 90 |  | DT | C | 03 | G2 | ME | 230 | 23 | 1S | BILL 5 | B05 | S2 | 1F | R00 | ACF04 | MEP | 230 | M1F |  |  |  |  |  |  |  |  |  |  |  |
| D03G226001C0 |  | DT-03 ; 1st Fix, Inst of Trunking/Conduiting (Prep/Recv-1) | 90d | 2011-05-15 A | 2011-11-24 | D03G223001C0, D03S107807C0, D03S207807C0 | 50% | 45d | 2011-06-02 | 2011-09-19 | 73.12d | 0d | ELECTRICAL [824.4 h]; Cost [42423.2 AED] | 42,423.24 | 21,211.62 | D03G226001C0 | 2 |  | 90 | 43987.9 | DT | C | 03 | G2 | ME | 260 | 01 | 1S | BILL 5 | B05 | S2 | 1F | R00 | ACF04 | MEP | 260 | M1F |  |  |  |  |  |  |  |  |  |  |  |
| D03G226013C0 |  | DT-03 ; 1st Fix, Inst of Cable Tray (Prep/Recv-1) | 90d | 2011-05-17 A | 2011-11-14 | D03G223001C0, D03G227010C0 SS+10d, D03S107807C0, D03S207807C0 | 60% | 36d | 2011-06-13 | 2011-09-29 | 87.12d | 9d | ELECTRICAL [430.8 h]; Cost [23263.3 AED] | 23,263.34 | 13,958 | D03G226013C0 |  |  | 95 | 24301.53 | DT | C | 03 | G2 | ME | 260 | 13 | 1S | BILL 5 | B05 | S2 | 1F | R00 | ACF04 | MEP | 260 | M1F |  |  |  |  |  |  |  |  |  |  |  |
| D03G222007C0 |  | DT-03 ; 1st Fix, Inst of Medical Gas pipe (Prep/Recv-1) | 90d | 2011-06-01 A | 2011-11-24 | D03G222005C0 SS+6d, D03G223001C0 | 50% | 45d | 2011-06-01 | 2011-09-18 | 81.12d | 59.4d | PLUMBING [1616.4 h]; Cost [83529.6 AED] | 83,529.57 | 41,764.78 | D03G222007C0 |  |  | 60 | 53243.42 | DT | C | 03 | G2 | ME | 220 | 07 | 1S | BILL 5 | B05 | S2 | 1F | R00 | ACF04 | MEP | 220 | M1F |  |  |  |  |  |  |  |  |  |  |  |
| D03G227010C0 |  | DT-03 ; 1st Fix, Inst of Trunking for ELV system (Prep/Recv-1) | 90d | 2011-06-01 A | 2011-11-24 | D03G223001C0, D03G226001C0 SS+14d, D03S107807C0, D03S207807C0 | 50% | 45d | 2011-06-01 | 2011-09-18 | 87.12d | 0d | ELECTRICAL [1689.6 h]; Cost [88597.9 AED] | 88,597.89 | 44,298.95 | D03G227010C0 |  |  | 95 | 92505.75 | DT | C | 03 | G2 | ME | 270 | 10 | 1S | BILL 5 | B05 | S2 | 1F | R00 | ACF04 | MEP | 270 | M1F |  |  |  |  |  |  |  |  |  |  |  |
| D03G227001C0 |  | DT-03 ; 1st Fix, Wiring/ Cabling work (Prep/Recv-1) | 84d | 2011-06-14 A | 2012-01-31 | D03G226001C0, D03G226013C0, D03G227010C0 | 35% | 54.6d | 2011-08-25 | 2011-12-10 | 107.53d | 93.5d | ELECTRICAL [436.8 h]; Cost [21894.9 AED] | 21,894.91 | 7,663.22 | D03G227001C0 |  |  | 45 | 9027.43 | DT | C | 03 | G2 | ME | 270 | 01 | 1S | BILL 5 | B05 | S2 | 1F | R00 | ACF04 | MEP | 270 | M1F |  |  |  |  |  |  |  |  |  |  |  |
| D03G223015C0 |  | DT-03 ; 2nd Fix, Insulation of CHW pipe & Duct (Prep/Recv-1) | 100d | 2011-07-10 A | 2012-04-17 | D03G223009C0, D03G223017C0, D03G223023C0 | 65% | 35d | 2011-09-07 | 2012-01-08 | 42.33d | 28.3d | MECHANICAL [5311.2 h]; Cost [286617 AED] | 286,617.06 | 186,301.09 | D03G223015C0 |  |  | 60 |  | DT | C | 03 | G2 | ME | 230 | 15 | 2n | BILL 5 | B05 | S2 | 2F | R00 | ACF07 | MEP | 230 |  |  |  |  |  |  |  | 65 | 60 |  |  |  |
| D03G223008C0 |  | DT-03 ; 1st Fix, Inst of VCD's/FD's (Prep/Recv-1) | 66d | 2011-09-05 A | 2012-04-16 | D03G223023C0, D03G205503C0 FF+18d | 5% | 62.7d | 2011-10-06 | 2011-12-27 | 14.03d | 0d | MECHANICAL [4312.8 h]; Cost [232964 AED] | 232,964.23 | 11,648.21 | D03G223008C0 |  |  | 60 |  | DT | C | 03 | G2 | ME | 230 | 08 | 1S | BILL 5 | B05 | S2 | 1F | R00 | ACF04 | MEP | 230 | M1F |  |  |  |  |  |  |  |  |  |  |  |
| D03G223009C0 |  | DT-03 ; 2nd Fix, Inst of VAV'S CHW connection (Prep/Recv-1) | 36d | 2011-09-05 A | 2012-03-07 | D03G223017C0 | 10% | 32.4d | 2011-10-03 | 2011-11-16 | 42.33d | 0d | MECHANICAL [1684.8 h]; Cost [91006.1 AED] | 91,006.06 | 9,100.61 | D03G223009C0 |  |  | 25 |  | DT | C | 03 | G2 | ME | 230 | 09 | 2n | BILL 5 | B05 | S2 | 2F | R00 | ACF07 | MEP | 230 |  |  |  |  |  |  |  |  |  |  |  |  |
| D03G205503C0 |  | DT-03 ; Ceiling Support for medical equipment (Prep/Recv-1) | 20d | 2011-12-14 | 2012-01-08 | D03G209201C0, DAFMI22002R20 FS+72d |  |  |  |  | 14.03d | 0d | SECONDARY STEEL [151 h]; STRUCTURAL STEEL [16 T(Fe)]; Cost |  |  | D03G205503C0 |  |  |  |  | DT | C | 03 | G2 | SW | 055 | 03 |  | BILL 5 | B05 | S2 | 03 | R00 | ACF03 |  | b |  |  |  |  |  | 335 | 962 |  |  |  |  |  |
| D03G205511C0 |  | DT-03 ; Wall reinforcement for MEP/Medical (Prep/Recv-1) | 24d | 2011-12-14 | 2012-01-12 | D03G209201C0, DAFMI22002R02 FS+72d |  |  |  |  | 39.73d | 25.7d | SECONDARY STEEL [65 h]; Cost |  |  | D03G205511C0 |  |  |  |  | DT | C | 03 | G2 | SW | 055 | 11 |  | BILL 5 | B05 | S2 | 03 | R00 | ACF03 |  | b |  |  |  |  |  |  |  |  |  |  |  |  |
| D03G222011C0 |  | DT-03 ; 2nd Fix, Drainage/Water pipe (wall) (Prep/Recv-1) | 36d | 2011-12-14 | 2012-01-26 | D03G209201C0, DAFMI22002R20 FS+72d |  |  |  |  | 21.73d | 0d | PLUMBING [1173.6 h]; Cost |  |  | D03G222011C0 |  |  | 25 |  | DT | C | 03 | G2 | ME | 220 | 11 | 2n | BILL 5 | B05 | S2 | 2F | R00 | ACF07 | MEP | 220 |  |  |  |  |  |  |  |  |  |  |  |  |
| D03G222015C0 |  | DT-03 ; 2nd Fix, Medical Gas pipe (Prep/Recv-1) | 36d | 2011-12-14 | 2012-01-26 | D03G209201C0, D03G222007C0 SS |  |  |  |  | 21.73d | 0d | PLUMBING [1616.4 h]; Cost |  |  | D03G222015C0 |  |  | 25 |  | DT | C | 03 | G2 | ME | 220 | 15 | 2n | BILL 5 | B05 | S2 | 2F | R00 | ACF07 | MEP | 220 |  |  |  |  |  |  |  |  |  |  |  |  |
| D03G226009C0 |  | DT-03 ; 2nd Fix, Inst of Wall conduites (Prep/Recv-1) | 36d | 2011-12-14 | 2012-01-26 | D03G209201C0 |  |  |  |  | 21.73d | 0d | ELECTRICAL [824.4 h]; Cost |  |  | D03G226009C0 |  |  | 25 |  | DT | C | 03 | G2 | ME | 260 | 09 | 2n | BILL 5 | B05 | S2 | 2F | R00 | ACF07 | MEP | 260 |  |  |  |  |  |  |  |  |  |  |  |  |
| D03G208103C0 |  | DT-03 ; Door Frames (Prep/Recv-1) | 42d | 2011-12-22 | 2012-02-11 | D03G209201C0 SS+14d, GNHE08101C0 FS+93d, D03G108103C0 SS+3d |  |  |  |  | 48d | 0d | ASSORTED DOORS [981 h]; Cost |  |  | D03G208103C0 |  |  |  |  | DT | C | 03 | G2 | DO | 081 | 03 |  | BILL 5 | B05 | S2 | DR | R00 | ACF06 |  | 081 |  |  |  |  |  | 316 | 947 |  |  | 08 |  |  |
| D03G201005C0 |  | DT-03 ; 2nd, Wall Inspection by Consultant (Prep/Recv-1) | 6d | 2012-01-26 | 2012-02-02 | D03G222011C0, D03G222015C0, D03G226009C0 |  |  |  |  | 21.73d | 7.7d | Labor General [1.2 h]; Cost |  |  | D03G201005C0 |  |  | 25 |  | DT | C | 03 | G2 | ME | 010 | 05 | 2n | BILL 5 | B05 | S2 | WI | R00 | ACF07 | MEP | 010 |  |  |  |  |  |  |  |  |  |  |  |  |
| D03G209205C0 |  | DT-03 ; Partitions Closing (Prep/Recv-1) | 54d | 2012-02-13 | 2012-04-16 | D03G201005C0, D03G205511C0, D03G209203C0, D03G222005C0, D03G222019C0, DAFOA09206C1 FF, D03G208103C0 FF, D03G221117C0, D03G223008C0 FF, DAFMI22002R20 FS+72d |  |  |  |  | 14.03d | 0d | PARTITIONS [1392 m]; PARTITIONS [10326 h]; Cost |  |  | D03G209205C0 |  |  |  |  | DT | C | 03 | G2 | PT | 092 | 05 |  | BILL 5 | B05 | S2 | FF | R00 | ACF06 | GP | 092 | P2F |  |  |  |  | 315 | 946 |  |  |  |  |  |
| D03G207103C0 |  | DT-03 ; Waterproofing (Prep/Recv-1) | 12d | 2012-04-16 | 2012-04-30 | D03G208103C0, D03G209205C0, DV10GZ07106R2 FF |  |  |  |  | 68.03d | 54d | THERMAL & MOISTURE [696 h]; THERMAL & MOISTURE [4621 m2]; Cost |  |  | D03G207103C0 |  |  |  |  | DT | C | 03 | G2 | FF | 071 | 03 |  | BILL 5 | B05 | S2 | 01 | R00 | ACF03 |  | 071 |  |  |  |  |  | 105 | 999 |  |  |  |  |  |
| D03G209901C0 |  | DT-03 ; Wall Prime & 1st coat (Prep/Recv-1) | 30d | 2012-04-16 | 2012-05-21 | D03G109901C0 SS+6d, D03G209205C0 |  |  |  |  | 14.03d | 0d | WALL PAINT [1888 h]; WALL PAINT [2356 m2]; Cost |  |  | D03G209901C0 |  |  |  |  | DT | C | 03 | G2 | PA | 099 | 01 |  | BILL 5 | B05 | S2 | 01 | R00 | ACF06 |  | 099 |  |  |  |  |  | 328 | 956 |  |  |  |  |  |
| D03G226007C0 |  | DT-03 ; 2nd Fix, Cable Pulling (Prep/Recv-1) | 42d | 2012-04-16 | 2012-06-04 | D03G209201C0 SS+6d, D03G209205C0 |  |  |  |  | 128.03d | 114d | ELECTRICAL [6634.8 h]; Cost |  |  | D03G226007C0 |  |  | 25 |  | DT | C | 03 | G2 | ME | 260 | 07 | 2n | BILL 5 | B05 | S2 | 2F | R00 | ACF07 | MEP | 260 |  |  |  |  |  |  |  |  |  |  |  |  |
| D03G226011C0 |  | DT-03 ; 2nd Fix, Inst of Equipment (DB) (Prep/Recv-1) | 48d | 2012-04-16 | 2012-06-11 | D03G209205C0 |  |  |  |  | 74.03d | 60d | ELECTRICAL [4054.8 h]; Cost |  |  | D03G226011C0 |  |  |  |  | DT | C | 03 | G2 | ME | 260 | 11 | 2n | BILL 5 | B05 | S2 | 2F | R00 | ACF04 | MEP | 260 |  |  |  |  |  |  |  |  |  |  | E |  |
| D03G226053C0 |  | DT-03 ; 2nd Fix, Wiring / Cabling (Prep/Recv-1) | 36d | 2012-04-16 | 2012-05-28 | D03G226009C0, D03G209203C0, D03G209205C0 |  |  |  |  | 134.03d | 120d | ELECTRICAL [436.8 h]; Cost |  |  | D03G226053C0 |  |  |  |  | DT | C | 03 | G2 | ME | 260 | 53 | 2n | BILL 5 | B05 | S2 | 2F | R00 | ACF07 | MEP | 260 |  |  |  |  |  | 389 | 977 |  |  |  |  |  |
| D03G205501C0 |  | DT-03 ; Handrails & balustrade (Prep/Recv-1) | 31.75d | 2012-05-21 | 2012-06-27 | D03G209901C0 |  |  |  |  | 54.27d | 40.25d | SECONDARY STEEL [321 h]; Cost |  |  | D03G205501C0 |  |  |  |  | DT | C | 03 | G2 | SW | 055 | 01 |  | BILL 5 | B05 | S2 | 01 | R00 | ACF03 |  | a |  |  |  |  |  |  |  |  |  |  |  |  |
| D03G209501C0 |  | DT-03 ; Ceiling Grid and Service Tile (Prep/Recv-1) | 36d | 2012-05-21 | 2012-07-03 | D03G205503C0, D03G209205C0 SS+15d, D03G221117C0, D03G223008C0, D03G223009C0, D03G223015C0, D03G227001C0, DAFMI22003R02 FS+72d, D03G209901C0 |  |  |  |  | 14.03d | 0d | CEILING GRID FOR GYPSUM [5766.08 h]; CEILING GRID FOR GYPSUM [493.4 m2]; Cost |  |  | D03G209501C0 |  |  |  |  | DT | C | 03 | G2 | CE | 095 | 01 |  | BILL 5 | B05 | S2 | 01 | R00 | ACF06 |  | 095 |  |  |  |  |  | 323 | 952 |  |  |  |  | R3 |
| D03G226015C0 |  | DT-03 ; Final Fix, Termination & Gladding of Cables (Prep/Recv-1) | 48d | 2012-06-04 | 2012-07-31 | D03G226005C0 |  |  |  |  | 74.03d | 60d | ELECTRICAL [368.4 h]; Cost |  |  | D03G226015C0 |  |  |  |  | DT | C | 03 | G2 | ME | 260 | 15 | FF | BILL 5 | B05 | S2 | FF | R00 | ACF07 | MEP | 260 |  |  |  |  |  |  |  |  |  |  |  |  |
| D03G209305C0 |  | DT-03 ; Flooring (Terrazzo) (Prep/Recv-1) | 36d | 2012-07-03 | 2012-08-14 | D03G207103C0, D03G209501C0 |  |  |  |  | 14.03d | 0d | TERRAZO FLOOR [670 m2]; TERRAZO FLOOR [1208 h]; Cost |  |  | D03G209305C0 |  |  |  |  | DT | C | 03 | G2 | FF | 096 | 05 |  | BILL 5 | B05 | S2 | 07 | R00 | ACF06 |  | TZ |  |  |  |  |  | 106 | 1000 |  |  |  |  |  |
| D03G209601C0 |  | DT-03 ; Flooring (Rubber & etc) (Prep/Recv-1) | 36d | 2012-07-03 | 2012-08-14 | D03G209901C0, D03G209501C0, D03G205501C0 FF |  |  |  |  | 14.03d | 0d | RUBBER FLOOR [400 h]; RUBBER FLOOR [996 m2]; Cost |  |  | D03G209601C0 |  |  |  |  | DT | C | 03 | G2 | FF | 096 | 01 |  | BILL 5 | B05 | S2 | 03 | R00 | ACF06 |  | RF |  |  |  |  |  | 326 | 955 |  |  |  |  |  |
| D03G209905C0 |  | DT-03 ; Ceiling Prime & 1st coat (Prep/Recv-1) | 36d | 2012-07-03 | 2012-08-14 | D03G209501C0 |  |  |  |  | 74.03d | 0d | ASSORTED CEILING FINISH [207 h]; Cost |  |  | D03G209905C0 |  |  |  |  | DT | C | 03 | G2 | PA | 099 | 05 |  | BILL 5 | B05 | S2 | 01 | R00 | ACF06 |  | 099 |  |  |  |  |  | 330 | 958 |  |  |  |  |  |
| D03G221115C0 |  | DT-03 ; 2nd Fix, Inst of Sprinkler droppers (Prep/Recv-1) | 36d | 2012-07-03 | 2012-08-14 | D03G209501C0 |  |  |  |  | 14.03d | 0d | MECHANICAL [2067.6 h]; Cost |  |  | D03G221115C0 |  |  |  |  | DT | C | 03 | G2 | ME | 211 | 15 | 2n | BILL 5 | B05 | S2 | 2F | R00 | ACF07 | MEP | 211 |  |  |  |  |  |  |  |  |  |  |  |  |
| D03G223021C0 |  | DT-03 ; 2nd Fix, Inst of Flexible Duct & Plenum boxes (Prep/Recv-1) | 36d | 2012-07-03 | 2012-08-14 | D03G209205C0, D03G209501C0 |  |  |  |  | 44.02d | 0d | MECHANICAL [274.8 h]; Cost |  |  | D03G223021C0 |  |  |  |  | DT | C | 03 | G2 | ME | 230 | 21 | 2n | BILL 5 | B05 | S2 | 2F | R00 | ACF07 | MEP | 230 |  |  |  |  |  |  |  |  |  |  |  |  |
| D03G226017C0 |  | DT-03 ; Final Fix, Inst of Ceiling rose (Prep/Recv-1) | 48d | 2012-07-03 | 2012-08-30 | D03G209501C0 |  |  |  |  | 43.02d | 0d | ELECTRICAL [67.2 h]; Cost |  |  | D03G226017C0 |  |  |  |  | DT | C | 03 | G2 | ME | 260 | 17 | FF | BILL 5 | B05 | S2 | FF | R00 | ACF07 | MEP | 260 |  |  |  |  |  |  |  |  |  |  |  |  |
| D03G227002C0 |  | DT-03 ; 2nd Fix, Wiring Droppers (Prep/Recv-1) | 36d | 2012-07-03 | 2012-08-14 | D03G209501C0 |  |  |  |  | 62.02d | 0d | ELECTRICAL [436.8 h]; Cost |  |  | D03G227002C0 |  |  |  |  | DT | C | 03 | G2 | ME | 270 | 02 | 2n | BILL 5 | B05 | S2 | 2F | R00 | ACF07 | MEP | 270 |  |  |  |  |  |  |  |  |  |  |  |  |
| D03G227020C0 |  | DT-03 ; 2nd Fix, Inst of ELV Equipment (Panels) (Prep/Recv-1) | 42d | 2012-07-03 | 2012-08-23 | D03G209205C0, D03G209501C0 |  |  |  |  | 14.03d | 0d | ELECTRICAL [1723.2 h]; Cost |  |  | D03G227020C0 |  |  |  |  | DT | C | 03 | G2 | ME | 270 | 20 | 2n | BILL 5 | B05 | S2 | 2F | R00 | ACF04 | MEP | 270 |  |  |  |  |  |  |  |  |  |  | E |  |
| D03G223019C0 |  | DT-03 ; Final Fix, Inst of Grilles & Diffusers (Prep/Recv-1) | 48d | 2012-07-10 | 2012-09-06 | D03G209501C0, D03G223021C0 SS+6d |  |  |  |  | 44.02d | 30d | MECHANICAL [2560.8 h]; Cost |  |  | D03G223019C0 |  |  |  |  | DT | C | 03 | G2 | ME | 230 | 19 | FF | BILL 5 | B05 | S2 | FF | R00 | ACF07 | MEP | 230 |  |  |  |  |  |  |  |  |  |  |  |  |
| D03G227030C0 |  | DT-03 ; Final Fix, Inst of ELV device (Detector/Speaker) (Prep/Recv-1) | 54d | 2012-07-10 | 2012-09-13 | D03G209501C0, D03G227002C0 SS+6d |  |  |  |  | 74.03d | 60d | ELECTRICAL [2152.8 h]; Cost |  |  | D03G227030C0 |  |  |  |  | DT | C | 03 | G2 | ME | 270 | 30 | FF | BILL 5 | B05 | S2 | FF | R00 | ACF07 | MEP | 270 |  |  |  |  |  |  |  |  |  |  |  |  |
| D03G226003C0 |  | DT-03 ; Final Fix, Inst of Light fittings (Prep/Recv-1) | 48d | 2012-07-11 | 2012-09-08 | D03G209501C0, D03G226017C0 SS+7d |  |  |  |  | 43.02d | 29d | ELECTRICAL [6626.4 h]; Cost |  |  | D03G226003C0 |  |  |  |  | DT | C | 03 | G2 | ME | 260 | 03 | FF | BILL 5 | B05 | S2 | FF | R00 | ACF07 | MEP | 260 |  |  |  |  |  |  |  |  |  |  |  |  |
| D03G206101C0 |  | DT-03 ; Wood / caseworks (Prep/Recv-1) | 54d | 2012-08-14 | 2012-10-18 | D03CO04415C0, D03G209501C0, D03G209901C0, D03CO04437C0, DAFWA00111M0, CAFWA00113M0, DAFMI22003R02 FS+190d, D03G209601C0, D03G209305C0, DZ9GZ06153R2 FF, DV09GZ06154R2 FF, DV10GZ06154R2 FF |  |  |  |  | 14.03d | 0d | WOOD WORK/CASEWORK [649.48 no]; WOOD WORK/CASEWORK [5445 h]; Cost |  |  | D03G206101C0 |  |  |  |  | DT | C | 03 | G2 | WO | 061 | 01 |  | BILL 5 | B05 | S2 | WW | R00 | ACF06 |  | 061 |  |  |  |  |  | 332 | 960 |  |  |  |  | R3 |
| D03G206102C0 |  | DT-03 ; Head Wall (Prep/Recv-1) | 31.75d | 2012-08-14 | 2012-09-22 | D03CO04415C0, D03G209501C0, D03G206101C0 SS, DAFWA00111M0, DAFMI22003R02 FS+190d |  |  |  |  | 36.27d | 22.25d | WOOD WORK/CASEWORK [3493 h]; Cost |  |  | D03G206102C0 |  |  |  |  | DT | C | 03 | G2 | WO | 061 | 02 |  | BILL 5 | B05 | S2 | WW | R00 | ACF06 |  | 061 |  |  |  |  |  | 332 | 960 |  |  |  |  | R3 |
| D03G208107C0 |  | DT-03 ; Doors (Prep/Recv-1) | 42d | 2012-08-14 | 2012-10-04 | D03G208103C0, D03G209901C0, D03G209601C0, D03G209305C0 |  |  |  |  | 40.4d | 0d | ASSORTED DOORS [1580 h]; ASSORTED DOORS [158 no]; Cost |  |  | D03G208107C0 |  |  |  |  | DT | C | 03 | G2 | DO | 081 | 07 |  | BILL 5 | B05 | S2 | DR | R00 | ACF06 |  | 081 |  |  |  |  |  | 317 | 948 |  |  | 08 |  |  |
| D03G209903C0 |  | DT-03 ; Wall Final Paint (Prep/Recv-1) | 36d | 2012-08-14 | 2012-09-27 | D03G209901C0, D03G209905C0 |  |  |  |  | 74.03d | 54d | WALL PAINT [1016 h]; WALL PAINT [1268 m2]; Cost |  |  | D03G209903C0 |  |  |  |  | DT | C | 03 | G2 | PA | 099 | 03 |  | BILL 5 | B05 | S2 | 02 | R00 | ACF06 |  | 099 |  |  |  |  |  | 329 | 957 |  |  |  |  |  |
| D03G221113C0 |  | DT-03 ; Final Fix, Inst of Sprinklers head/ Extinguisher (Prep/Recv-1) | 48d | 2012-08-14 | 2012-10-11 | D03G209501C0, D03G221115C0, DZ9GZ21158R2 FF, DV09GZ21159R2 FF, DV080522000R2 FF, CV080522000R2 FF |  |  |  |  | 14.03d | 0d | MECHANICAL [403.2 h]; Cost |  |  | D03G221113C0 |  |  |  |  | DT | C | 03 | G2 | ME | 211 | 13 | FF | BILL 5 | B05 | S2 | FF | R00 | ACF07 | MEP | 211 |  |  |  |  |  |  |  |  |  |  |  |  |
| D03G222025C0 |  | DT-03 ; Final Fix, Inst of Sanitary Ware (Prep/Recv-1) | 36d | 2012-08-14 | 2012-09-27 | D03G209205C0, D03G209305C0, A10230 FS+148d |  |  |  |  | 26.02d | 0d | PLUMBING [1917.6 h]; Cost |  |  | D03G222025C0 |  |  |  |  | DT | C | 03 | G2 | ME | 220 | 25 | FF | BILL 5 | B05 | S2 | FF | R00 | ACF07 | MEP | 220 |  |  |  |  |  |  |  |  |  |  |  |  |
| D03G209701C0 |  | DT-03 ; Wall finishes (ST, WD, WC) (Prep/Recv-1) | 48d | 2012-08-23 | 2012-10-18 | D03G226011C0, D03G227020C0, DAFMI22003R02 FS+170d, DGLCO09701R2 FF |  |  |  |  | 14.03d | 0d | ASSORTED WALL FINISH [2289 h]; ASSORTED WALL FINISH [2631 m2]; Cost |  |  | D03G209701C0 |  |  |  |  | DT | C | 03 | G2 | WF | 097 | 01 |  | BILL 5 | B05 | S2 | 01 | R00 | ACF06 |  | 097 |  |  |  |  |  | 105 | 1002 |  |  |  |  |  |
| D03G211005C0 |  | DT-03 ; Utility belt (Prep/Recv-1) | 24d | 2012-08-23 | 2012-09-20 | D03G206101C0 SS+6d, D03G209205C0 |  |  |  |  | 14.03d | 0d | FF&E [111 h]; FF&E [59.16 no]; Cost |  |  | D03G211005C0 |  |  |  |  | DT | C | 03 | G2 | WO | 110 | 05 |  | BILL 5 | B05 | S2 | 05 | R00 | ACF08 |  | e |  |  |  |  |  |  |  |  |  |  |  |  |
| D03G222029C0 |  | DT-03 ; Final Fix, Medical Gas pipe (Prep/Recv-1) | 18d | 2012-09-20 | 2012-10-11 | D03G209501C0, D03G211005C0 |  |  |  |  | 14.03d | 0d | PLUMBING [1616.4 h]; Cost |  |  | D03G222029C0 |  |  |  |  | DT | C | 03 | G2 | ME | 220 | 29 | FF | BILL 5 | B05 | S2 | FF | R00 | ACF07 | MEP | 220 |  |  |  |  |  |  |  |  |  |  |  |  |
| D03G222021C0 |  | DT-03 ; Final Fix, Terminate Sanitary Ware & Appliances (Prep/Recv-1) | 36d | 2012-09-27 | 2012-11-11 | D03G222011C0, D03G222025C0 |  |  |  |  | 26.02d | 12d | PLUMBING [1917.6 h]; Cost |  |  | D03G222021C0 |  |  |  |  | DT | C | 03 | G2 | ME | 220 | 21 | FF | BILL 5 | B05 | S2 | FF | R00 | ACF07 | MEP | 220 |  |  |  |  |  |  |  |  |  |  |  |  |
| D03G208709C0 |  | DT-03 ; Ironmongery (Prep/Recv-1) | 27.62d | 2012-10-04 | 2012-11-07 | D03G208107C0 |  |  |  |  | 40.4d | 26.38d | IRONMONGERY [670 h]; IRONMONGERY [67 no]; Cost |  |  | D03G208709C0 |  |  |  |  | DT | C | 03 | G2 | DO | 087 | 09 |  | BILL 5 | B05 | S2 | IM | R00 | ACF06 |  | 087 |  |  |  |  |  | 322 | 951 |  |  | 08 |  |  |
| D03G201006C0 |  | DT-03 ; 2nd, Ceiling Inspection by Consultants (Prep/Recv-1) | 6d | 2012-10-11 | 2012-10-18 | D03G221115C0, D03G223009C0, D03G223015C0, D03G227002C0, D03G209501C0, D03G221113C0, D03G222029C0, D03G223019C0, D03G226003C0, D03G226017C0, D03G226015C0 |  |  |  |  | 14.03d | 0d | Labor General [1.2 h]; Cost |  |  | D03G201006C0 |  |  |  |  | DT | C | 03 | G2 | ME | 010 | 06 | 2n | BILL 5 | B05 | S2 | CI | R00 | ACF07 | MEP | 010 |  |  |  |  |  |  |  |  |  |  |  |  |
| D03G209503C0 |  | DT-03 ; Ceiling closure - ACT/Gypsum (Prep/Recv-1) | 18d | 2012-10-18 | 2012-11-11 | D03G201006C0, D03G221115C0, D03G226005C0, D03G227001C0, D03G227002C0, DAFOA09505C1 FF, D03G206101C0, D03G209701C0, D03G206102C0, D03G223021C0, D03G226053C0, D03G226007C0 |  |  |  |  | 14.03d | 0d | ASSORTED CEILING FINISH [1168.5 h]; CEILING GYPSUM [161.75 h]; ASSORTED CEILING FINISH [1900 m2]; CEILING GYPSUM [493 m2]; Cost |  |  | D03G209503C0 |  |  |  |  | DT | C | 03 | G2 | CE | 095 | 03 |  | BILL 5 | B05 | S2 | 02 | R00 | ACF06 |  | 095 |  |  |  |  |  | 324 | 953 |  |  |  |  | R3 |
| D03G211001C0 |  | DT-03 ; Wall Protection (WP, CG, WG, FCG) (Prep/Recv-1) | 24d | 2012-10-18 | 2012-11-19 | D03G209701C0, D03G209903C0 SS |  |  |  |  | 32.02d | 18d | FF&E [2826 h]; Cost |  |  | D03G211001C0 |  |  |  |  | DT | C | 03 | G2 | WF | 110 | 01 |  | BILL 5 | B05 | S2 | 03 | R00 | ACF08 |  | b |  |  |  |  |  | 326 | 1001 |  |  |  |  |  |
| D03G209907C0 |  | DT-03 ; Ceiling Final paint (Prep/Recv-1) | 12d | 2012-11-11 | 2012-11-26 | D03G209601C0, D03G209905C0, D03G209503C0 |  |  |  |  | 26.02d | 12d | ASSORTED CEILING FINISH [113 h]; Cost |  |  | D03G209907C0 |  |  |  |  | DT | C | 03 | G2 | PA | 099 | 07 |  | BILL 5 | B05 | S2 | 02 | R00 | ACF06 |  | 099 |  |  |  |  |  | 331 | 959 |  |  |  |  |  |
| D03G211003C0 |  | DT-03 ; FF & E (Prep/Recv-1) | 12d | 2012-11-11 | 2012-11-26 | D03G209601C0, D03G209503C0 |  |  |  |  | 26.02d | 12d | FF&E [80 h]; FF&E [42.44 no]; Cost |  |  | D03G211003C0 |  |  |  |  | DT | C | 03 | G2 | WO | 110 | 03 |  | BILL 5 | B05 | S2 | 04 | R00 | ACF08 |  | a |  |  |  |  |  | 333 | 961 |  |  |  |  |  |
| D03G222027C0 |  | DT-03 ; Final Fix, Inst of All drain (Prep/Recv-1) | 12d | 2012-11-11 | 2012-11-26 | D03G209305C0, D03G209503C0 |  |  |  |  | 14.03d | 0d | PLUMBING [1173.6 h]; Cost |  |  | D03G222027C0 |  |  |  |  | DT | C | 03 | G2 | ME | 220 | 27 | FF | BILL 5 | B05 | S2 | FF | R00 | ACF07 | MEP | 220 |  |  |  |  |  |  |  |  |  |  |  |  |
| D03G226019C0 |  | DT-03 ; Final Fix, Inst of Switch/Sockets (Prep/Recv-1) | 12d | 2012-11-11 | 2012-11-26 | D03G209901C0, D03G209503C0 |  |  |  |  | 14.03d | 0d | ELECTRICAL [610.8 h]; Cost |  |  | D03G226019C0 |  |  |  |  | DT | C | 03 | G2 | ME | 260 | 19 | FF | BILL 5 | B05 | S2 | FF | R00 | ACF07 | MEP | 260 |  |  |  |  |  |  |  |  |  |  |  |  |

| ID | WBS | Activity | Duration | Start | Finish | Predecessors | Complete | Remaining | Planned start | Planned finish | Total float | Free float | Calendar | Resources | Cost | Actual cost | change id | CCAD BUILDING(SET) | CCAD PHASE(SET) | CCAD FLOOR(SET) | CCAD ZONE(SET) | CCAD WORK(SET) | CCAD SECTION(SET) | CCAD SERIAL No.(SET) | CCAD CBS(SET) | CCAD BILL(SET) | CCAD HANDOVER(SET) | CCAD TAG(SET) | CCAD REV(SET) | CCADACF (SET) | CCAD SSCF | RENZ % COMPLETE | Claimed This Month | CCAD SUB ZONE MEP(SET) | CCAD CSA | Act Selector % | July2011 Target% Complete | PERCENT COMPLETE | user_number8 | user_integer1 | user_integer2 | user_number7 | Change Order # | NEW ACTIVITY ID | P_811 | P_711 | CCAD DIVISION(SET) | CCAD MEQ | R3 Finish |
| --- | --- | --- | --- | --- | --- | --- | --- | --- | --- | --- | --- | --- | --- | --- | --- | --- | --- | --- | --- | --- | --- | --- | --- | --- | --- | --- | --- | --- | --- | --- | --- | --- | --- | --- | --- | --- | --- | --- | --- | --- | --- | --- | --- | --- | --- | --- | --- | --- | --- |
|  | 10 | **Precommissioning Tesing & snagging (Gen Or, Pat Hold, Prev/Recv)** |  | 2012-11-26 | 2013-01-07 |  |  |  |  |  |  |  |  |  |  |  |  |  |  |  |  |  |  |  |  |  |  |  |  |  |  |  |  |  |  |  |  |  |  |  |  |  |  |  |  |  |  |  |  |
| D03TS01804C0 |  | DT-03 ; MEP de-snag, FIREM sign-off | 12d | 2012-11-26 | 2012-12-11 | D03G226015C0, D03G222025C0, D03G222027C0, D03G222021C0, D03G221113C0, D03G223019C0, D03G222029C0, D03G226017C0, D03G226003C0, D03G227030C0, D03G226019C0, D03G211005C0 |  |  |  |  | 14.03d | 0d |  | TESTING & COMMISSIONING [1275 h]; Cost |  |  | D03TS01801C0 | DT | C | 03 | TS | SC | 018 | 01 | BILL 5 | B05 | S2 | 01 | R00 | ACF07 | 018 |  |  |  |  |  |  |  |  |  |  |  |  |  |  |  |  |  |  |
| D03TS01809C0 |  | DT-03 ; Touch-up & Clean / JV inspection /CIR /De-snag | 17.88d | 2012-12-11 | 2012-12-31 | D03G206101C0, D03G206102C0, D03G208709C0, D03G209701C0, D03G209903C0, D03G209907C0, D03G211001C0, D03G211003C0, D03TS01804C0, D03G205501C0, D03G209503C0 |  |  |  |  | 14.03d | 0d |  | TESTING & COMMISSIONING [213 h]; Cost |  |  | D03TS01802C0 | DT | C | 03 | TS | SC | 018 | 02 | BILL 5 | B05 | S2 | 02 | R00 | ACF07 | 018 |  |  |  |  |  |  |  |  |  |  |  |  |  |  |  |  |  |  |
| D03TS01814C0 |  | DT-03 ; Consultant's final de-snag inspection | 7d | 2012-12-31 | 2013-01-07 | D03TS01809C0 |  |  |  |  | 17.02d | 6d | R00-C02, Calendar day | Labor General [1 h]; Cost |  |  | D03TS01803C0 | DT | C | 03 | TS | SC | 018 | 03 | BILL 5 | B05 | S2 | 03 | R00 | ACF07 | 018 |  |  |  |  |  |  |  |  |  |  |  |  |  |  |  |  |  |  |
|  | 04 | **Prep/Recv , Endo, Urol Proc** |  | 2011-03-23 | 2012-12-23 |  |  |  |  |  |  |  |  |  |  |  |  |  |  |  |  |  |  |  |  |  |  |  |  |  |  |  |  |  |  |  |  |  |  |  |  |  |  |  |  |  |  |  |  |
| D03UR22019C0 |  | DT-03 ; 1st Fix, Inst of Drainage pipe (ceiling) (Urol Proc) | 62d | 2011-03-23 A | 2011-06-18 A | D03UR23001C0, D03UR26013C0 SS+14d | 100% |  | 2011-05-24 | 2011-08-06 |  |  |  | PLUMBING [1173.6 h]; Cost [61888.2 AED] | 61,888.15 | 61,888.15 | D03UR22019C0 | DT | C | 03 | UR | ME | 220 | 19 | BILL 5 | B05 | S2 | 1F | R00 | ACF04 | 220 | 95 | 3674.92 | 1S | MEP | M1F |  |  |  |  |  |  |  |  |  |  |  |  |  |
| D03UR23001C0 |  | DT-03 ; 1st Fix, Inst. of Supports for MEP (Urol Proc) | 27d | 2011-04-07 A | 2011-07-31 A | D03S107807C0 SS, D03S307807C0 SS | 100% |  | 2011-03-26 | 2011-04-26 |  |  |  | MECHANICAL [1338 h]; Cost [75432.9 AED] | 75,432.94 | 75,432.94 | D03UR23001C0 | DT | C | 03 | UR | ME | 230 | 01 | BILL 5 | B05 | S2 | 1F | R00 | ACF04 | 230 | 95 |  | 1S | MEP | M1F | 100 |  |  |  |  |  |  |  |  |  |  |  |  |
| D03UR27010C0 |  | DT-03 ; 1st Fix, Inst of Trunking for ELV system (Urol Proc) | 90d | 2011-04-24 A | 2011-11-24 | D03S107807C0, D03S307807C0, D03UR23001C0, D03UR26013C0 SS+10d | 50% | 45d | 2011-05-19 | 2011-09-05 | 99.72d | 0d |  | ELECTRICAL [1689.6 h]; Cost [88597.9 AED] | 88,597.89 | 44,298.95 | D03UR27010C0 | DT | C | 03 | UR | ME | 270 | 10 | BILL 5 | B05 | S2 | 1F | R00 | ACF04 | 270 | 15 | 71948.77 | 1S | MEP | M1F | 88 |  |  |  |  |  |  |  |  |  |  |  |  |
| D03UR21111C0 |  | DT-03 ; 1st Fix, Inst of Sprinkler main pipe (Urol Proc) | 250d | 2011-05-09 A | 2011-10-29 | D03UR23001C0 | 90% | 25d | 2011-04-26 | 2012-02-23 | 87.12d | 0d |  | MECHANICAL [981.6 h]; Cost [53543.7 AED] | 53,543.69 | 48,189.32 | D03UR21111C0 | DT | C | 03 | UR | ME | 211 | 11 | BILL 5 | B05 | S2 | 1F | R00 | ACF04 | 211 | 80 | 3107.05 | 1S | MEP | M1F | 98 | 90 |  |  |  |  |  |  |  |  |  |  |  |
| D03UR09201C0 |  | DT-03 ; Metal Studs (Urol Proc) | 90d | 2011-05-15 A | 2011-12-14 | D03EY09201C0 SS+6d, D03PA09201C0, D03UR23001C0 | 77% | 20.7d | 2011-07-10 | 2011-10-24 | 27.73d | 0d |  | PARTITIONS [7939 h]; PARTITIONS - Metal Studs [1072 m]; Cost |  |  | D03UR09201C0 | DT | C | 03 | UR | PT | 092 | 01 | BILL 5 | B05 | S2 | 1F | R00 | ACF06 | 092 | 20 | 203128.89 |  | GP | PMS |  |  | 0 | 0 | 0 | 0 | 313 | 944 | 70 | 66 |  |  |  |
| D03UR09203C0 |  | DT-03 ; Partitions 1st face (Urol Proc) | 90d | 2011-05-15 A | 2012-01-29 | D03UR09201C0 SS+12d, D03UR21111C0 FF, D03UR23023C0 FF, D03UR23017C0 FF | 70% | 27d | 2011-07-24 | 2011-11-10 | 31.73d | 4d |  | PARTITIONS [1072 m]; PARTITIONS [6205 h]; Cost |  |  | D03UR09203C0 | DT | C | 03 | UR | PT | 092 | 03 | BILL 5 | B05 | S2 | 2F | R00 | ACF06 | 092 | 5 | 78204.62 |  | GP | P1F |  |  | 0 | 0 | 0 | 0 | 314 | 945 | 50 | 27 |  |  |  |
| D03UR21117C0 |  | DT-03 ; 1st Fix, Inst of Sprinkler branch pipe (Urol Proc) | 180d | 2011-05-15 A | 2012-01-29 | D03UR09201C0, D03UR21111C0, D03UR05503C0 FF+18d | 85% | 27d | 2011-08-14 | 2012-03-20 | 79.72d | 52d |  | MECHANICAL [1441.2 h]; Cost [78749.8 AED] | 78,749.79 | 66,937.32 | D03UR21117C0 | DT | C | 03 | UR | ME | 211 | 17 | BILL 5 | B05 | S2 | 1F | R00 | ACF04 | 211 | 55 | 27387.39 | 1S | MEP | M1F | 98 |  |  |  |  |  |  |  |  |  |  |  |  |
| D03UR22005C0 |  | DT-03 ; 1st Fix, Inst of Water supply pipe (ceiling) (Urol Proc) | 84d | 2011-05-15 A | 2011-12-04 | D03UR22019C0 SS+7d, D03UR23001C0 | 40% | 50.4d | 2011-07-02 | 2011-10-10 | 78.72d | 51d |  | PLUMBING [4896 h]; Cost [264473 AED] | 264,473.49 | 105,789.4 | D03UR22005C0 | DT | C | 03 | UR | ME | 220 | 05 | BILL 5 | B05 | S2 | 1F | R00 | ACF04 | 220 | 15 |  | 1S | MEP | M1F | 90 |  |  |  |  |  |  |  |  |  |  |  |  |
| D03UR23017C0 |  | DT-03 ; 1st Fix, Inst of CHW pipe (Urol Proc) | 150d | 2011-05-15 A | 2012-01-29 | D03UR22005C0 SS+14d, D03UR23001C0, D03UR05503C0 FF+18d | 80% | 30d | 2011-07-18 | 2012-01-18 | 31.73d | 0d |  | MECHANICAL [6325.2 h]; Cost [345418 AED] | 345,418.28 | 276,334.63 | D03UR23017C0 | DT | C | 03 | UR | ME | 230 | 17 | BILL 5 | B05 | S2 | 1F | R00 | ACF04 | 230 | 20 | 40065.22 | 1S | MEP | M1F | 90 |  |  |  |  |  |  |  |  |  |  |  |  |
| D03UR23023C0 |  | DT-03 ; 1st Fix, Inst of Main Ducting (Urol Proc) | 180d | 2011-05-15 A | 2012-01-18 | D03UR23001C0, D03UR23017C0 SS+4d | 88% | 21.6d | 2011-07-23 | 2012-02-28 | 40.12d | 0d |  | MECHANICAL [11402.4 h]; Cost [622619 AED] | 622,619.08 | 547,904.79 | D03UR23023C0 | DT | C | 03 | UR | ME | 230 | 23 | BILL 5 | B05 | S2 | 1F | R00 | ACF04 | 230 | 30 | 397203.12 | 1S | MEP | M1F | 88 |  |  |  |  |  |  |  |  |  |  |  |  |
| D03UR26001C0 |  | DT-03 ; 1st Fix, Inst of Trunking/Conduiting (Urol Proc) | 150d | 2011-05-15 A | 2011-10-01 | D03S107807C0, D03S307807C0, D03UR23001C0 | 100% | 0d | 2011-06-02 | 2011-12-04 | 108.6d | 0d |  | ELECTRICAL; Cost [42423.2 AED] | 42,423.24 | 33,938.59 | D03UR26001C0 | DT | C | 03 | UR | ME | 260 | 01 | BILL 5 | B05 | S2 | 1F | R00 | ACF04 | 260 | 10 | 34990.64 | 1S | MEP | M1F | 80 |  |  |  |  |  |  |  |  |  |  |  |  |
| D03UR22007C0 |  | DT-03 ; 1st Fix, Inst of Medical Gas pipe (Urol Proc) | 90d | 2011-06-01 A | 2011-11-14 | D03UR21111C0 SS+14d, D03UR23001C0 | 60% | 36d | 2011-06-01 | 2011-09-18 | 87.12d | 59.4d |  | PLUMBING [1616.4 h]; Cost [83529.6 AED] | 83,529.57 | 50,117.74 | D03UR22007C0 | DT | C | 03 | UR | ME | 220 | 07 | BILL 5 | B05 | S2 | 1F | R00 | ACF04 | 220 |  | 87125.6 | 1S | MEP | M1F | 90 |  |  |  |  |  |  |  |  |  |  |  |  |
| D03UR26013C0 |  | DT-03 ; 1st Fix, Inst of Cable Tray (Urol Proc) | 90d | 2011-06-01 A | 2011-11-14 | D03S107807C0, D03S307807C0, D03UR23001C0, D03UR26001C0 SS+10d | 60% | 36d | 2011-06-01 | 2011-09-18 | 78.72d | 0d |  | ELECTRICAL [430.8 h]; Cost [23263.3 AED] | 23,263.34 | 13,958 | D03UR26013C0 | DT | C | 03 | UR | ME | 260 | 13 | BILL 5 | B05 | S2 | 1F | R00 | ACF04 | 260 |  | 22951.45 | 1S | MEP | M1F | 85 |  |  |  |  |  |  |  |  |  |  |  |  |
| D03UR27001C0 |  | DT-03 ; 1st Fix, Wiring/ Cabling work (Urol Proc) | 78d | 2011-06-14 A | 2012-02-11 | D03UR26001C0, D03UR26013C0, D03UR27010C0 | 20% | 62.4d | 2011-08-14 | 2011-11-19 | 99.72d | 72d |  | ELECTRICAL [436.8 h]; Cost [21894.9 AED] | 21,894.91 | 4,378.98 | D03UR27001C0 | DT | C | 03 | UR | ME | 270 | 01 | BILL 5 | B05 | S2 | 1F | R00 | ACF04 | 270 |  | 9027.43 | 1S | MEP | M1F | 45 |  |  |  |  |  |  |  |  |  |  |  |  |
| D03UR23008C0 |  | DT-03 ; 1st Fix, Inst of VCD's/FD's (Urol Proc) | 66d | 2011-09-05 A | 2012-04-02 | D03UR23023C0, D03UR05503C0 FF+18d | 5% | 62.7d | 2011-09-26 | 2011-12-18 | 55.42d | 27.7d |  | MECHANICAL [4312.8 h]; Cost [232964 AED] | 232,964.23 | 11,648.21 | D03UR23008C0 | DT | C | 03 | UR | ME | 230 | 08 | BILL 5 | B05 | S2 | 1F | R00 | ACF04 | 230 |  |  | 1S | MEP | M1F | 85 |  |  |  |  |  |  |  |  |  |  |  |  |
| D03UR23009C0 |  | DT-03 ; 2nd Fix, Inst of VAV'S CHW connection (Urol Proc) | 36d | 2011-09-05 A | 2012-03-07 | D03UR23017C0 | 10% | 32.4d | 2011-10-06 | 2011-11-20 | 37.42d | 0d |  | MECHANICAL [1684.8 h]; Cost [91006.1 AED] | 91,006.06 | 9,100.61 | D03UR23009C0 | DT | C | 03 | UR | ME | 230 | 09 | BILL 5 | B05 | S2 | 2F | R00 | ACF07 | 230 |  |  | 2n | MEP |  | 45 |  |  |  |  |  |  |  |  |  |  |  |  |
| D03UR23015C0 |  | DT-03 ; 2nd Fix, Insulation of CHW pipe & Duct (Urol Proc) | 42d | 2011-09-05 A | 2012-04-23 | D03UR23009C0, D03UR23017C0, D03UR23023C0 | 5% | 39.9d | 2011-11-21 | 2012-01-11 | 37.42d | 9.7d |  | MECHANICAL [5311.2 h]; Cost [286617 AED] | 286,617.06 | 14,330.85 | D03UR23015C0 | DT | C | 03 | UR | ME | 230 | 15 | BILL 5 | B05 | S2 | 2F | R00 | ACF07 | 230 |  |  | 2n | MEP |  | 65 |  |  |  |  |  |  |  |  |  |  |  |  |
| D03UR05503C0 |  | DT-03 ; Ceiling Support for medical equipment (Urol Proc) | 20d | 2011-12-14 | 2012-01-08 | D03UR09201C0, DAFMI22002R20 FS+72d |  |  |  |  | 31.73d | 0d |  | SECONDARY STEEL [111 h]; STRUCTURAL STEEL [16 T(Fe)]; Cost |  |  | D03UR05503C0 | DT | C | 03 | UR | SW | 055 | 03 | BILL 5 | B05 | S2 | 03 | R00 | ACF03 | b |  |  |  |  |  |  |  |  |  |  |  | 335 | 962 |  |  |  |  |  |
| D03UR05511C0 |  | DT-03 ; Wall reinforcement for MEP/Medical (Urol Proc) | 24d | 2011-12-14 | 2012-01-12 | D03UR09201C0, DAFMI22002R02 FS+72d |  |  |  |  | 45.73d | 18d |  | SECONDARY STEEL [48 h]; Cost |  |  | D03UR05511C0 | DT | C | 03 | UR | SW | 055 | 11 | BILL 5 | B05 | S2 | 03 | R00 | ACF03 | b |  |  |  |  |  |  |  |  |  |  |  |  |  |  |  |  |  |  |
| D03UR22011C0 |  | DT-03 ; 2nd Fix, Drainage/Water pipe (wall) (Urol Proc) | 36d | 2011-12-14 | 2012-01-26 | D03UR09201C0, DAFMI22002R20 FS+72d |  |  |  |  | 27.73d | 0d |  | PLUMBING [1173.6 h]; Cost |  |  | D03UR22011C0 | DT | C | 03 | UR | ME | 220 | 11 | BILL 5 | B05 | S2 | 2F | R00 | ACF07 | 220 |  |  | 2n | MEP |  | 25 |  |  |  |  |  |  |  |  |  |  |  |  |
| D03UR22015C0 |  | DT-03 ; 2nd Fix, Medical Gas pipe (Urol Proc) | 36d | 2011-12-14 | 2012-01-26 | D03UR09201C0, D03UR22007C0 SS |  |  |  |  | 27.73d | 0d |  | PLUMBING [1616.4 h]; Cost |  |  | D03UR22015C0 | DT | C | 03 | UR | ME | 220 | 15 | BILL 5 | B05 | S2 | 2F | R00 | ACF07 | 220 |  |  | 2n | MEP |  | 25 |  |  |  |  |  |  |  |  |  |  |  |  |
| D03UR26009C0 |  | DT-03 ; 2nd Fix, Inst of Wall conduites (Urol Proc) | 36d | 2011-12-14 | 2012-01-26 | D03UR09201C0 |  |  |  |  | 27.73d | 0d |  | ELECTRICAL [824.4 h]; Cost |  |  | D03UR26009C0 | DT | C | 03 | UR | ME | 260 | 09 | BILL 5 | B05 | S2 | 2F | R00 | ACF07 | 260 |  |  | 2n | MEP |  | 25 |  |  |  |  |  |  |  |  |  |  |  |  |
| D03UR08103C0 |  | DT-03 ; Door Frames (Urol Proc) | 42d | 2011-12-29 | 2012-02-18 | D03UR09201C0 SS+14d, GNHE08101C0 FS+93d, D03PA08103C0 SS+3d |  |  |  |  | 63.12d | 35.4d |  | ASSORTED DOORS [754 h]; Cost |  |  | D03UR08103C0 | DT | C | 03 | UR | DO | 081 | 03 | BILL 5 | B05 | S2 | DR | R00 | ACF06 | 081 |  |  |  |  |  |  |  |  |  |  |  | 316 | 947 |  |  | 08 |  |  |
| D03UR01005C0 |  | DT-03 ; 2nd, Wall Inspection by Consultant (Urol Proc) | 6d | 2012-01-26 | 2012-02-02 | D03UR22011C0, D03UR22015C0, D03UR26009C0 |  |  |  |  | 27.73d | 0d |  | Labor General [1.2 h]; Cost |  |  | D03UR01005C0 | DT | C | 03 | UR | ME | 010 | 05 | BILL 5 | B05 | S2 | WI | R00 | ACF07 | 010 |  |  | 2n | MEP |  | 25 |  |  |  |  |  |  |  |  |  |  |  |  |
| D03UR09205C0 |  | DT-03 ; Partitions Closing (Urol Proc) | 48d | 2012-02-02 | 2012-03-31 | D03UR01005C0, D03UR05511C0, D03UR09203C0, D03UR22005C0, D03UR22019C0, DAFOA09206C1 FF, D03UR08103C0 FF, D03UR27010C0 FF, D03UR23009C0 FF, D03UR21117C0 FF, DAFMI22002R20 FS+72d |  |  |  |  | 27.73d | 0d |  | PARTITIONS [1072 m]; PARTITIONS [7957 h]; Cost |  |  | D03UR09205C0 | DT | C | 03 | UR | PT | 092 | 05 | BILL 5 | B05 | S2 | FF | R00 | ACF06 | 092 |  |  |  | GP | P2F |  |  |  |  |  |  | 315 | 946 |  |  |  |  |  |
| D03UR07103C0 |  | DT-03 ; Waterproofing (Urol Proc) | 12d | 2012-03-31 | 2012-04-14 | D03UR08103C0, D03UR09205C0 |  |  |  |  | 77.85d | 0d |  | THERMAL & MOISTURE [512 h]; THERMAL & MOISTURE [3375 m2]; Cost |  |  | D03UR07103C0 | DT | C | 03 | UR | FF | 071 | 03 | BILL 5 | B05 | S2 | 01 | R00 | ACF03 | 071 |  |  |  |  |  |  |  |  |  |  |  | 105 | 999 |  |  |  |  |  |
| D03UR09901C0 |  | DT-03 ; Wall Prime & 1st coat (Urol Proc) | 30d | 2012-03-31 | 2012-05-05 | D03UR09205C0 |  |  |  |  | 27.73d | 0d |  | WALL PAINT [1742 h]; WALL PAINT [2174 m2]; Cost |  |  | D03UR09901C0 | DT | C | 03 | UR | PA | 099 | 01 | BILL 5 | B05 | S2 | 01 | R00 | ACF06 | 099 |  |  |  |  |  |  |  |  |  |  |  | 328 | 956 |  |  |  |  |  |
| D03UR26005C0 |  | DT-03 ; 2nd Fix, Wiring for Power/Lighting/Emergency (Urol Proc) | 36d | 2012-03-31 | 2012-05-12 | D03UR09205C0 |  |  |  |  | 93.72d | 0d |  | ELECTRICAL [436.8 h]; Cost |  |  | D03UR26005C0 | DT | C | 03 | UR | ME | 260 | 05 | BILL 5 | B05 | S2 | 2F | R00 | ACF07 | 260 |  |  | 2n | MEP |  |  |  |  |  |  |  |  |  |  |  |  |  |  |
| D03UR26007C0 |  | DT-03 ; 2nd Fix, Cable Pulling (Urol Proc) | 42d | 2012-03-31 | 2012-05-19 | D03UR09201C0 SS+6d, D03UR09205C0 |  |  |  |  | 141.72d | 114d |  | ELECTRICAL [6634.8 h]; Cost |  |  | D03UR26007C0 | DT | C | 03 | UR | ME | 260 | 07 | BILL 5 | B05 | S2 | 2F | R00 | ACF07 | 260 |  |  | 2n | MEP |  | 25 |  |  |  |  |  |  |  |  |  |  |  |  |
| D03UR26011C0 |  | DT-03 ; 2nd Fix, Inst of Equipment (DB) (Urol Proc) | 48d | 2012-03-31 | 2012-05-26 | D03UR09205C0 |  |  |  |  | 87.72d | 60d |  | ELECTRICAL [4054.8 h]; Cost |  |  | D03UR26011C0 | DT | C | 03 | UR | ME | 260 | 11 | BILL 5 | B05 | S2 | 2F | R00 | ACF04 | 260 |  |  | 2n | MEP |  |  |  |  |  |  |  |  |  |  |  |  | E |  |
| D03UR26053C0 |  | DT-03 ; 2nd Fix, Wiring / Cabling (Urol Proc) | 36d | 2012-03-31 | 2012-05-12 | D03UR26009C0, D03UR09205C0 |  |  |  |  | 147.72d | 120d |  | ELECTRICAL [436.8 h]; Cost |  |  | D03UR26053C0 | DT | C | 03 | UR | ME | 260 | 53 | BILL 5 | B05 | S2 | 2F | R00 | ACF07 | 260 |  |  | 2n | MEP |  |  |  |  |  |  |  | 389 | 977 |  |  |  |  |  |
| D03UR09305C0 |  | DT-03 ; Ceramic floor tile (Urol Proc) | 27.88d | 2012-04-14 | 2012-05-16 | D03UR07103C0 |  |  |  |  | 77.85d | 0d |  | CERAMIC FLOOR TILES [168 h]; CERAMIC FLOOR TILES [93 m2]; Cost |  |  | D03UR09305C0 | DT | C | 03 | UR | FF | 093 | 05 | BILL 5 | B05 | S2 | 02 | R00 | ACF06 | CT |  |  |  |  |  |  |  |  |  |  |  | 106 | 1000 |  |  |  |  |  |
| D03UR05501C0 |  | DT-03 ; Handrails & balustrade (Urol Proc) | 33.25d | 2012-05-05 | 2012-06-12 | D03UR09901C0 |  |  |  |  | 66.47d | 38.75d |  | SECONDARY STEEL [238 h]; Cost |  |  | D03UR05501C0 | DT | C | 03 | UR | SW | 055 | 01 | BILL 5 | B05 | S2 | 01 | R00 | ACF03 | a |  |  |  |  |  |  |  |  |  |  |  |  |  |  |  |  |  |  |
| D03UR09501C0 |  | DT-03 ; Ceiling Grid and Service Tile (Urol Proc) | 36d | 2012-05-05 | 2012-06-17 | D03UR05503C0, D03UR09205C0 SS+15d, D03UR21117C0, D03UR23008C0, D03UR23009C0, D03UR23015C0, D03UR27001C0, D03UR09901C0 |  |  |  |  | 27.73d | 0d |  | CEILING GRID FOR GYPSUM [4436.57 h]; CEILING GRID FOR GYPSUM [379.54 m2]; Cost |  |  | D03UR09501C0 | DT | C | 03 | UR | CE | 095 | 01 | BILL 5 | B05 | S2 | 01 | R00 | ACF06 | 095 |  |  |  |  |  |  |  |  |  |  |  | 323 | 952 |  |  |  |  |  |
| D03UR26015C0 |  | DT-03 ; Final Fix, Termination & Gladding of Cables (Urol Proc) | 48d | 2012-05-12 | 2012-07-08 | D03UR26005C0 |  |  |  |  | 93.72d | 66d |  | ELECTRICAL [368.4 h]; Cost |  |  | D03UR26015C0 | DT | C | 03 | UR | ME | 260 | 15 | BILL 5 | B05 | S2 | FF | R00 | ACF07 | 260 |  |  | FF | MEP |  |  |  |  |  |  |  |  |  |  |  |  |  |  |
| D03UR22025C0 |  | DT-03 ; Final Fix, Inst of Sanitary Ware (Urol Proc) | 48d | 2012-05-16 | 2012-07-12 | D03UR09205C0, D03UR09305C0, A10230 FS+148d |  |  |  |  | 77.85d | 0d |  | PLUMBING [1917.6 h]; Cost |  |  | D03UR22025C0 | DT | C | 03 | UR | ME | 220 | 25 | BILL 5 | B05 | S2 | FF | R00 | ACF07 | 220 |  |  | FF | MEP |  |  |  |  |  |  |  |  |  |  |  |  |  |  |
| D03UR09601C0 |  | DT-03 ; Flooring (Rubber & etc) (Urol Proc) | 36d | 2012-06-17 | 2012-07-29 | D03UR09901C0, D03UR09501C0, D03UR05501C0 FF |  |  |  |  | 27.73d | 0d |  | RUBBER FLOOR [312 h]; RUBBER FLOOR [766 m2]; Cost |  |  | D03UR09601C0 | DT | C | 03 | UR | FF | 096 | 01 | BILL 5 | B05 | S2 | 03 | R00 | ACF06 | RF |  |  |  |  |  |  |  |  |  |  |  | 326 | 955 |  |  |  |  |  |
| D03UR09905C0 |  | DT-03 ; Ceiling Prime & 1st coat (Urol Proc) | 36d | 2012-06-17 | 2012-07-29 | D03UR09501C0 |  |  |  |  | 87.72d | 0d |  | ASSORTED CEILING FINISH [161 h]; Cost |  |  | D03UR09905C0 | DT | C | 03 | UR | PA | 099 | 05 | BILL 5 | B05 | S2 | 01 | R00 | ACF06 | 099 |  |  |  |  |  |  |  |  |  |  |  | 330 | 958 |  |  |  |  |  |
| D03UR21115C0 |  | DT-03 ; 2nd Fix, Inst of Sprinkler droppers (Urol Proc) | 36d | 2012-06-17 | 2012-07-29 | D03UR09501C0 |  |  |  |  | 57.73d | 0d |  | MECHANICAL [2067.6 h]; Cost |  |  | D03UR21115C0 | DT | C | 03 | UR | ME | 211 | 15 | BILL 5 | B05 | S2 | 2F | R00 | ACF07 | 211 |  |  | 2n | MEP |  |  |  |  |  |  |  |  |  |  |  |  |  |  |
| D03UR23021C0 |  | DT-03 ; 2nd Fix, Inst of Flexible Duct & Plenum boxes (Urol Proc) | 36d | 2012-06-17 | 2012-07-29 | D03UR09205C0, D03UR09501C0 |  |  |  |  | 45.73d | 0d |  | MECHANICAL [274.8 h]; Cost |  |  | D03UR23021C0 | DT | C | 03 | UR | ME | 230 | 21 | BILL 5 | B05 | S2 | 2F | R00 | ACF07 | 230 |  |  | 2n | MEP |  |  |  |  |  |  |  |  |  |  |  |  |  |  |
| D03UR26017C0 |  | DT-03 ; Final Fix, Inst of Ceiling rose (Urol Proc) | 42d | 2012-06-17 | 2012-08-05 | D03UR09501C0 |  |  |  |  | 59.73d | 0d |  | ELECTRICAL [67.2 h]; Cost |  |  | D03UR26017C0 | DT | C | 03 | UR | ME | 260 | 17 | BILL 5 | B05 | S2 | FF | R00 | ACF07 | 260 |  |  | FF | MEP |  |  |  |  |  |  |  |  |  |  |  |  |  |  |
| D03UR27002C0 |  | DT-03 ; 2nd Fix, Wiring Droppers (Urol Proc) | 36d | 2012-06-17 | 2012-07-29 | D03UR09501C0 |  |  |  |  | 39.73d | 0d |  | ELECTRICAL [436.8 h]; Cost |  |  | D03UR27002C0 | DT | C | 03 | UR | ME | 270 | 02 | BILL 5 | B05 | S2 | 2F | R00 | ACF07 | 270 |  |  | 2n | MEP |  |  |  |  |  |  |  |  |  |  |  |  |  |  |
| D03UR27020C0 |  | DT-03 ; 2nd Fix, Inst of ELV Equipment (Panels) (Urol Proc) | 42d | 2012-06-17 | 2012-08-05 | D03UR09205C0, D03UR09501C0 |  |  |  |  | 27.73d | 0d |  | ELECTRICAL [1723.2 h]; Cost |  |  | D03UR27020C0 | DT | C | 03 | UR | ME | 270 | 20 | BILL 5 | B05 | S2 | 2F | R00 | ACF04 | 270 |  |  | 2n | MEP |  |  |  |  |  |  |  |  |  |  |  |  | E |  |
| D03UR21113C0 |  | DT-03 ; Final Fix, Inst of Sprinklers head/ Extinguisher (Urol Proc) | 48d | 2012-06-24 | 2012-08-21 | D03UR09501C0, D03UR21115C0 SS+6d |  |  |  |  | 57.73d | 30d |  | MECHANICAL [403.2 h]; Cost |  |  | D03UR21113C0 | DT | C | 03 | UR | ME | 211 | 13 | BILL 5 | B05 | S2 | FF | R00 | ACF07 | 211 |  |  | FF | MEP |  |  |  |  |  |  |  |  |  |  |  |  |  |  |
| D03UR23019C0 |  | DT-03 ; Final Fix, Inst of Grilles & Diffusers (Urol Proc) | 60d | 2012-06-24 | 2012-09-04 | D03UR09501C0, D03UR23021C0 SS+6d |  |  |  |  | 45.73d | 18d |  | MECHANICAL [2560.8 h]; Cost |  |  | D03UR23019C0 | DT | C | 03 | UR | ME | 230 | 19 | BILL 5 | B05 | S2 | FF | R00 | ACF07 | 230 |  |  | FF | MEP |  |  |  |  |  |  |  |  |  |  |  |  |  |  |
| D03UR26003C0 |  | DT-03 ; Final Fix, Inst of Light fittings (Urol Proc) | 42d | 2012-06-28 | 2012-08-16 | D03UR09501C0, D03UR26017C0 SS+10d |  |  |  |  | 59.73d | 32d |  | ELECTRICAL [6626.4 h]; Cost |  |  | D03UR26003C0 | DT | C | 03 | UR | ME | 260 | 03 | BILL 5 | B05 | S2 | FF | R00 | ACF07 | 260 |  |  | FF | MEP |  |  |  |  |  |  |  |  |  |  |  |  |  |  |
| D03UR22021C0 |  | DT-03 ; Final Fix, Terminate Sanitary Ware & Appliances (Urol Proc) | 48d | 2012-07-12 | 2012-09-09 | D03UR22011C0, D03UR22025C0 |  |  |  |  | 77.85d | 50.12d |  | PLUMBING [1917.6 h]; Cost |  |  | D03UR22021C0 | DT | C | 03 | UR | ME | 220 | 21 | BILL 5 | B05 | S2 | FF | R00 | ACF07 | 220 |  |  | FF | MEP |  |  |  |  |  |  |  |  |  |  |  |  |  |  |
| D03UR06101C0 |  | DT-03 ; Wood / caseworks (Urol Proc) | 54d | 2012-07-29 | 2012-10-02 | D03CO04415C0, D03UR09501C0, D03UR09901C0, D03CO04437C0, DAFWA00111M0, CAFWA00113M0, D03UR09601C0 |  |  |  |  | 27.73d | 0d |  | WOOD WORK/CASEWORK [476.29 no]; WOOD WORK/CASEWORK [3994 h]; Cost |  |  | D03UR06101C0 | DT | C | 03 | UR | WO | 061 | 01 | BILL 5 | B05 | S2 | WW | R00 | ACF06 | 061 |  |  |  |  |  |  |  |  |  |  |  | 332 | 960 |  |  |  |  |  |
| D03UR06102C0 |  | DT-03 ; Head Wall (Urol Proc) | 30.5d | 2012-07-29 | 2012-09-04 | D03CO04415C0, D03UR09501C0, D03UR06101C0 SS, DAFWA00111M0 |  |  |  |  | 93.22d | 65.5d |  | WOOD WORK/CASEWORK [2910 h]; Cost |  |  | D03UR06102C0 | DT | C | 03 | UR | WO | 061 | 02 | BILL 5 | B05 | S2 | WW | R00 | ACF06 | 061 |  |  |  |  |  |  |  |  |  |  |  | 332 | 960 |  |  |  |  |  |
| D03UR08107C0 |  | DT-03 ; Doors (Urol Proc) | 42d | 2012-07-29 | 2012-09-18 | D03UR08103C0, D03UR09901C0, D03UR09601C0 |  |  |  |  | 56.73d | 0d |  | ASSORTED DOORS [1220 h]; ASSORTED DOORS [122 no]; Cost |  |  | D03UR08107C0 | DT | C | 03 | UR | DO | 081 | 07 | BILL 5 | B05 | S2 | DR | R00 | ACF06 | 081 |  |  |  |  |  |  |  |  |  |  |  | 317 | 948 |  |  | 08 |  |  |
| D03UR09903C0 |  | DT-03 ; Wall Final Paint (Urol Proc) | 36d | 2012-07-29 | 2012-09-11 | D03UR09901C0, D03UR09905C0, D03UR09601C0 |  |  |  |  | 87.72d | 54d |  | WALL PAINT [939 h]; WALL PAINT [1171 m2]; Cost |  |  | D03UR09903C0 | DT | C | 03 | UR | PA | 099 | 03 | BILL 5 | B05 | S2 | 02 | R00 | ACF06 | 099 |  |  |  |  |  |  |  |  |  |  |  | 329 | 957 |  |  |  |  |  |
| D03UR27030C0 |  | DT-03 ; Final Fix, Inst of ELV device (Detector/Speaker) (Urol Proc) | 36d | 2012-07-29 | 2012-09-11 | D03UR09501C0, D03UR27002C0 |  |  |  |  | 39.73d | 12d |  | ELECTRICAL [2152.8 h]; Cost |  |  | D03UR27030C0 | DT | C | 03 | UR | ME | 270 | 30 | BILL 5 | B05 | S2 | FF | R00 | ACF07 | 270 |  |  | FF | MEP |  |  |  |  |  |  |  |  |  |  |  |  |  |  |
| D03UR09701C0 |  | DT-03 ; Wall finishes (ST, WD, WC) (Urol Proc) | 48d | 2012-08-05 | 2012-10-02 | D03UR26011C0, D03UR27020C0, DAFMI22003R02 FS+170d |  |  |  |  | 27.73d | 0d |  | ASSORTED WALL FINISH [1752 h]; ASSORTED WALL FINISH [2014 m2]; Cost |  |  | D03UR09701C0 | DT | C | 03 | UR | WF | 097 | 01 | BILL 5 | B05 | S2 | 01 | R00 | ACF06 | 097 |  |  |  |  |  |  |  |  |  |  |  | 105 | 1002 |  |  |  |  | R3 |
| D03UR11005C0 |  | DT-03 ; Utility belt (Urol Proc) | 24d | 2012-08-05 | 2012-09-04 | D03UR06101C0 SS+6d, D03UR09205C0 |  |  |  |  | 27.73d | 0d |  | FF&E [82 h]; FF&E [43.39 no]; Cost |  |  | D03UR11005C0 | DT | C | 03 | UR | WO | 110 | 05 | BILL 5 | B05 | S2 | 05 | R00 | ACF08 | e |  |  |  |  |  |  |  |  |  |  |  |  |  |  |  |  |  |  |
| D03UR22029C0 |  | DT-03 ; Final Fix, Medical Gas pipe (Urol Proc) | 18d | 2012-09-04 | 2012-09-25 | D03UR09501C0, D03UR11005C0 |  |  |  |  | 27.73d | 0d |  | PLUMBING [1616.4 h]; Cost |  |  | D03UR22029C0 | DT | C | 03 | UR | ME | 220 | 29 | BILL 5 | B05 | S2 | FF | R00 | ACF07 | 220 |  |  | FF | MEP |  |  |  |  |  |  |  |  |  |  |  |  |  |  |
| D03UR08709C0 |  | DT-03 ; Ironmongery (Urol Proc) | 25d | 2012-09-18 | 2012-10-17 | D03UR08107C0 |  |  |  |  | 56.73d | 29d |  | IRONMONGERY [520 h]; IRONMONGERY [52 no]; Cost |  |  | D03UR08709C0 | DT | C | 03 | UR | DO | 087 | 09 | BILL 5 | B05 | S2 | IM | R00 | ACF06 | 087 |  |  |  |  |  |  |  |  |  |  |  | 322 | 951 |  |  | 08 |  |  |
| D03UR01006C0 |  | DT-03 ; 2nd, Ceiling Inspection by Consultants (Urol Proc) | 6d | 2012-09-25 | 2012-10-02 | D03UR21115C0, D03UR23009C0, D03UR23015C0, D03UR27002C0, D03UR09501C0, D03UR21113C0, D03UR22029C0, D03UR23019C0, D03UR26003C0, D03UR26017C0, D03UR27030C0, D03UR26015C0 |  |  |  |  | 27.73d | 0d |  | Labor General [1.2 h]; Cost |  |  | D03UR01006C0 | DT | C | 03 | UR | ME | 010 | 06 | BILL 5 | B05 | S2 | CI | R00 | ACF07 | 010 |  |  | 2n | MEP |  |  |  |  |  |  |  |  |  |  |  |  |  |  |
| D03UR09503C0 |  | DT-03 ; Ceiling closure - ACT/Gypsum (Urol Proc) | 18d | 2012-10-02 | 2012-10-23 | D03UR01006C0, D03UR21115C0, D03UR26005C0, D03UR27001C0, D03UR27002C0, DAFOA09505C1 FF, D03UR06101C0, D03UR09701C0, D03UR23021C0, D03UR26053C0, D03UR26007C0 |  |  |  |  | 27.73d | 0d |  | ASSORTED CEILING FINISH [898.51 h]; CEILING GYPSUM [124.44 h]; ASSORTED CEILING FINISH [1461 m2]; CEILING GYPSUM [380 m2]; Cost |  |  | D03UR09503C0 | DT | C | 03 | UR | CE | 095 | 03 | BILL 5 | B05 | S2 | 02 | R00 | ACF06 | 095 |  |  |  |  |  |  |  |  |  |  |  | 324 | 953 |  |  |  |  |  |
| D03UR11001C0 |  | DT-03 ; Wall Protection (WP, CG, WG, FCG) (Urol Proc) | 24d | 2012-10-02 | 2012-11-01 | D03UR09701C0, D03UR09903C0 SS |  |  |  |  | 45.73d | 18d |  | FF&E [2094 h]; Cost |  |  | D03UR11001C0 | DT | C | 03 | UR | WF | 110 | 01 | BILL 5 | B05 | S2 | 03 | R00 | ACF08 | b |  |  |  |  |  |  |  |  |  |  |  | 326 | 1001 |  |  |  |  |  |
| D03UR09907C0 |  | DT-03 ; Ceiling Final paint (Urol Proc) | 12d | 2012-10-23 | 2012-11-08 | D03UR09601C0, D03UR09905C0, D03UR09503C0 |  |  |  |  | 39.73d | 12d |  | ASSORTED CEILING FINISH [87 h]; Cost |  |  | D03UR09907C0 | DT | C | 03 | UR | PA | 099 | 07 | BILL 5 | B05 | S2 | 02 | R00 | ACF06 | 099 |  |  |  |  |  |  |  |  |  |  |  | 331 | 959 |  |  |  |  |  |
| D03UR11003C0 |  | DT-03 ; FF & E (Urol Proc) | 12d | 2012-10-23 | 2012-11-08 | D03UR09601C0, D03UR09503C0 |  |  |  |  | 39.73d | 12d |  | FF&E [59 h]; FF&E [31.13 no]; Cost |  |  | D03UR11003C0 | DT | C | 03 | UR | WO | 110 | 03 | BILL 5 | B05 | S2 | 04 | R00 | ACF08 | a |  |  |  |  |  |  |  |  |  |  |  | 333 | 961 |  |  |  |  |  |
| D03UR22027C0 |  | DT-03 ; Final Fix, Inst of All drain (Urol Proc) | 12d | 2012-10-23 | 2012-11-08 | D03UR09305C0, D03UR09503C0 |  |  |  |  | 27.73d | 0d |  | PLUMBING [1173.6 h]; Cost |  |  | D03UR22027C0 | DT | C | 03 | UR | ME | 220 | 27 | BILL 5 | B05 | S2 | FF | R00 | ACF07 | 220 |  |  | FF | MEP |  |  |  |  |  |  |  |  |  |  |  |  |  |  |
| D03UR26019C0 |  | DT-03 ; Final Fix, Inst of Switch/Sockets (Urol Proc) | 12d | 2012-10-23 | 2012-11-08 | D03UR09901C0, D03UR09503C0 |  |  |  |  | 27.73d | 0d |  | ELECTRICAL [610.8 h]; Cost |  |  | D03UR26019C0 | DT | C | 03 | UR | ME | 260 | 19 | BILL 5 | B05 | S2 | FF | R00 | ACF07 | 260 |  |  | FF | MEP |  |  |  |  |  |  |  |  |  |  |  |  |  |  |

| ID | WBS | Activity | Duration | Start | Finish | Predecessors | Complete | Remaining | Planned start | Planned finish | Total float | Free float | Calendar | Resources | Cost | Actual cost | change id | CCAD BUILDING(SET) | CCAD PHASE(SET) | CCAD FLOOR(SET) | CCAD ZONE(SET) | CCAD WORK(SET) | CCAD SECTION(SET) | CCAD SERIAL No.(SET) | CCAD CBS(SET) | CCAD BILL(SET) | CCAD HANDOVER(SET) | CCAD TAG(SET) | CCAD REV(SET) | CCADACF (SET) | CCAD SSCF | RENZ % COMPLETE | July2011 Target% Complete | CCAD SUB ZONE MEP(SET) | CCAD CSA | Act Selector % | Claimed This Month | user_number8 | user_integer1 | user_integer2 | user_number7 | Change Order # | NEW ACTIVITY ID | P_811 | P_711 | CCAD DIVISION(SET) | CCAD MEQ | R3 Finish |
| --- | --- | --- | --- | --- | --- | --- | --- | --- | --- | --- | --- | --- | --- | --- | --- | --- | --- | --- | --- | --- | --- | --- | --- | --- | --- | --- | --- | --- | --- | --- | --- | --- | --- | --- | --- | --- | --- | --- | --- | --- | --- | --- | --- | --- | --- | --- | --- | --- |
|  | 10 | **Precommissioning Tesing & snagging (Prep/Recv , Endo, Urol Proc)** |  | 2012-11-08 | 2012-12-23 |  |  |  |  |  |  |  |  |  |  |  |  |  |  |  |  |  |  |  |  |  |  |  |  |  |  |  |  |  |  |  |  |  |  |  |  |  |  |  |  |  |  |  |
| D03TS01805C0 |  | DT-03 ; MEP de-snag, FIREM sign-off | 12d | 2012-11-08 | 2012-11-24 | D03UR22025C0, D03UR22027C0, D03UR26015C0, D03UR22021C0, D03UR21113C0, D03UR23019C0, D03UR22029C0, D03UR26017C0, D03UR26003C0, D03UR27030C0, D03UR26019C0, D03UR11005C0 |  |  |  |  | 27.73d | 0d |  | TESTING & COMMISSIONING [1275 h]; Cost |  |  | D03TS01801C0 | DT | C | 03 | TS | SC | 018 | 01 | BILL 5 | B05 | S2 | 01 | R00 | ACF07 | 018 |  |  |  |  |  |  |  |  |  |  |  |  |  |  |  |  |  |
| D03TS01810C0 |  | DT-03 ; Touch-up & Clean / JV inspection /CIR /De-snag | 17.88d | 2012-11-24 | 2012-12-16 | D03UR06101C0, D03UR06102C0, D03UR08709C0, D03UR09305C0, D03UR09701C0, D03UR09903C0, D03UR09907C0, D03UR11001C0, D03UR11003C0, D03UR05501C0, D03TS01805C0, D03UR09503C0 |  |  |  |  | 27.73d | 0d |  | TESTING & COMMISSIONING [213 h]; Cost |  |  | D03TS01802C0 | DT | C | 03 | TS | SC | 018 | 02 | BILL 5 | B05 | S2 | 02 | R00 | ACF07 | 018 |  |  |  |  |  |  |  |  |  |  |  |  |  |  |  |  |  |
| D03TS01815C0 |  | DT-03 ; Consultant's final de-snag inspection | 7d | 2012-12-16 | 2012-12-23 | D03TS01810C0 |  |  |  |  | 32.73d | 21.7d | R00-C02, Calendar day | Labor General [1 h]; Cost |  |  | D03TS01803C0 | DT | C | 03 | TS | SC | 018 | 03 | BILL 5 | B05 | S2 | 03 | R00 | ACF07 | 018 |  |  |  |  |  |  |  |  |  |  |  |  |  |  |  |  |  |
|  | 05 | **Eye Or, Plastic Or, Induct, Prep/Recv** |  | 2011-03-26 | 2013-01-07 |  |  |  |  |  |  |  |  |  |  |  |  |  |  |  |  |  |  |  |  |  |  |  |  |  |  |  |  |  |  |  |  |  |  |  |  |  |  |  |  |  |  |  |
| D03EY22019C0 |  | DT-03 ; 1st Fix, Inst of Drainage pipe (ceiling) (Eye , Plastic) | 250d | 2011-03-26 A | 2011-10-05 | D03EY23001C0, D03EY27010C0 SS+10d | 98% | 5d | 2011-05-24 | 2012-03-22 | 81.12d | 0d |  | PLUMBING [1173.6 h]; Cost [61888.2 AED] | 61,888.15 | 60,650.39 | D03EY22019C0 | DT | C | 03 | EY | ME | 220 | 19 | BILL 5 | B05 | S2 | 1F | R00 | ACF04 | 220 | 90 | 90 | 1S | MEP | M1F |  |  |  |  |  |  |  |  |  |  |  |  |
| D03EY21111C0 |  | DT-03 ; 1st Fix, Inst of Sprinkler main pipe (Eye , Plastic) | 200d | 2011-03-27 A | 2011-10-23 | D03EY22019C0 SS+14d, D03EY23001C0 | 90% | 20d | 2011-06-09 | 2012-02-09 | 81.12d | 0d |  | MECHANICAL [981.6 h]; Cost [53543.7 AED] | 53,543.69 | 48,189.32 | D03EY21111C0 | DT | C | 03 | EY | ME | 211 | 11 | BILL 5 | B05 | S2 | 1F | R00 | ACF04 | 211 | 80 | 90 | 1S | MEP | M1F | 3107.05 |  |  |  |  |  |  |  |  |  |  |  |
| D03EY22005C0 |  | DT-03 ; 1st Fix, Inst of Water supply pipe (ceiling) (Eye , Plastic) | 90d | 2011-04-06 A | 2011-11-14 | D03EY22019C0 SS+7d, D03EY23001C0 | 60% | 36d | 2011-07-02 | 2011-10-17 | 87.12d | 72.6d |  | PLUMBING [4896 h]; Cost [264473 AED] | 264,473.49 | 158,684.09 | D03EY22005C0 | DT | C | 03 | EY | ME | 220 | 05 | BILL 5 | B05 | S2 | 1F | R00 | ACF04 | 220 | 50 | 88 | 1S | MEP | M1F |  |  |  |  |  |  |  |  |  |  |  |  |
| D03EY23001C0 |  | DT-03 ; 1st Fix, Inst. of Supports for MEP (Eye , Plastic) | 27d | 2011-04-07 A | 2011-06-01 A | D03S107807C0 SS, D03S307807C0 SS | 100% |  | 2011-03-26 | 2011-04-26 |  |  |  | MECHANICAL [1338 h]; Cost [75432.9 AED] | 75,432.94 | 75,432.94 | D03EY23001C0 | DT | C | 03 | EY | ME | 230 | 01 | BILL 5 | B05 | S2 | 1F | R00 | ACF04 | 230 | 95 |  | 1S | MEP | M1F | 4375.11 |  |  |  |  |  |  |  |  |  |  |  |
| D03EY21117C0 |  | DT-03 ; 1st Fix, Inst of Sprinkler branch pipe (Eye , Plastic) | 251d | 2011-04-17 A | 2012-01-29 | D03EY09201C0, D03EY21111C0, D03EY05503C0 FF+18d | 95% | 12.5d | 2011-08-25 | 2012-06-24 | 25.73d | 11.2d |  | MECHANICAL [1441.2 h]; Cost [78749.8 AED] | 78,749.79 | 74,812.3 | D03EY21117C0 | DT | C | 03 | EY | ME | 211 | 17 | BILL 5 | B05 | S2 | 1F | R00 | ACF04 | 211 | 65 | 95 | 1S | MEP | M1F | 18258.2 |  |  |  |  |  |  |  |  |  |  |  |
| D03EY23023C0 |  | DT-03 ; 1st Fix, Inst of Main Ducting (Eye , Plastic) | 200d | 2011-04-19 A | 2012-01-17 | D03EY23001C0, D03EY23017C0 SS+7d | 90% | 20d | 2011-06-30 | 2012-02-29 | 35.73d | 0d |  | MECHANICAL [11402.4 h]; Cost [622619 AED] | 622,619.08 | 560,357.18 | D03EY23023C0 | DT | C | 03 | EY | ME | 230 | 23 | BILL 5 | B05 | S2 | 1F | R00 | ACF04 | 230 | 55 | 90 | 1S | MEP | M1F | 216656.1 |  |  |  |  |  |  |  |  |  |  |  |
| D03EY09201C0 |  | DT-03 ; Metal Studs (Eye , Plastic) | 90d | 2011-05-15 A | 2011-12-14 | D03EY23001C0, D03G209201C0 SS+6d, D03PA09201C0 | 77% | 20.7d | 2011-07-03 | 2011-10-17 | 14.53d | 0d |  | PARTITIONS [5947 h]; PARTITIONS - Metal Studs [803 m]; Cost |  |  | D03EY09201C0 | DT | C | 03 | EY | PT | 092 | 01 | BILL 5 | B05 | S2 | 1F | R00 | ACF06 | 092 | 30 |  |  | GP | PMS | 114260 | 0 | 0 | 0 | 0 | 313 | 944 | 70 | 66 |  |  |  |
| D03EY09203C0 |  | DT-03 ; Partitions 1st face (Eye , Plastic) | 90d | 2011-05-15 A | 2012-01-29 | D03EY09201C0 SS+12d, D03EY23023C0 FF, D03EY23017C0 FF, D03EY26013C0 FF | 70% | 27d | 2011-07-17 | 2011-10-31 | 25.73d | 11.2d |  | PARTITIONS [803 m]; PARTITIONS [4642 h]; Cost |  |  | D03EY09203C0 | DT | C | 03 | EY | PT | 092 | 03 | BILL 5 | B05 | S2 | 2F | R00 | ACF06 | 092 | 5 |  |  | GP | P1F | 58653.46 | 0 | 0 | 0 | 0 | 314 | 945 | 50 | 27 |  |  |  |
| D03EY26001C0 |  | DT-03 ; 1st Fix, Inst of Trunking/Conduiting (Eye , Plastic) | 90d | 2011-06-01 A | 2011-11-24 | D03EY23001C0, D03S107807C0, D03S307807C0 | 50% | 45d | 2011-06-01 | 2011-09-18 | 81.12d | 0d |  | ELECTRICAL [824.4 h]; Cost [42423.2 AED] | 42,423.24 | 21,211.62 | D03EY26001C0 | DT | C | 03 | EY | ME | 260 | 01 | BILL 5 | B05 | S2 | 1F | R00 | ACF04 | 260 |  | 90 | 1S | MEP | M1F | 42488.63 |  |  |  |  |  |  |  |  |  |  |  |
| D03EY22007C0 |  | DT-03 ; 1st Fix, Inst of Medical Gas pipe (Eye , Plastic) | 90d | 2011-06-07 A | 2011-11-14 | D03EY21111C0 SS+10d, D03EY23001C0 | 60% | 36d | 2011-06-29 | 2011-10-15 | 81.12d | 59.4d |  | PLUMBING [1616.4 h]; Cost [83529.6 AED] | 83,529.57 | 50,117.74 | D03EY22007C0 | DT | C | 03 | EY | ME | 220 | 07 | BILL 5 | B05 | S2 | 1F | R00 | ACF04 | 220 |  | 88 | 1S | MEP | M1F | 77444.98 |  |  |  |  |  |  |  |  |  |  |  |
| D03EY23017C0 |  | DT-03 ; 1st Fix, Inst of CHW pipe (Eye , Plastic) | 150d | 2011-06-07 A | 2012-01-29 | D03EY21111C0 SS+10d, D03EY23001C0, D03EY05503C0 FF+18d | 80% | 30d | 2011-06-29 | 2011-12-29 | 25.73d | 0d |  | MECHANICAL [6325.2 h]; Cost [345418 AED] | 345,418.28 | 276,334.63 | D03EY23017C0 | DT | C | 03 | EY | ME | 230 | 17 | BILL 5 | B05 | S2 | 1F | R00 | ACF04 | 230 |  | 90 | 1S | MEP | M1F | 120195.65 |  |  |  |  |  |  |  |  |  |  |  |
| D03EY27001C0 |  | DT-03 ; 1st Fix, Wiring/ Cabling work (Eye , Plastic) | 78d | 2011-06-07 A | 2012-02-11 | D03EY26001C0, D03EY26013C0, D03EY27010C0 | 20% | 62.4d | 2011-09-13 | 2011-12-19 | 93.72d | 79.2d |  | ELECTRICAL [436.8 h]; Cost [21894.9 AED] | 21,894.91 | 4,378.98 | D03EY27001C0 | DT | C | 03 | EY | ME | 270 | 01 | BILL 5 | B05 | S2 | 1F | R00 | ACF04 | 270 |  | 45 | 1S | MEP | M1F | 11606.7 |  |  |  |  |  |  |  |  |  |  |  |
| D03EY27010C0 |  | DT-03 ; 1st Fix, Inst of Trunking for ELV system (Eye , Plastic) | 90d | 2011-06-18 A | 2011-11-24 | D03EY23001C0, D03EY26001C0 SS+14d, D03S107807C0, D03S307807C0 | 50% | 45d | 2011-06-18 | 2011-10-04 | 81.12d | 0d |  | ELECTRICAL [1689.6 h]; Cost [88597.9 AED] | 88,597.89 | 44,298.95 | D03EY27010C0 | DT | C | 03 | EY | ME | 270 | 10 | BILL 5 | B05 | S2 | 1F | R00 | ACF04 | 270 |  | 90 | 1S | MEP | M1F | 92505.75 |  |  |  |  |  |  |  |  |  |  |  |
| D03EY23015C0 |  | DT-03 ; 2nd Fix, Insulation of CHW pipe & Duct (Eye , Plastic) | 100d | 2011-07-10 A | 2012-04-17 | D03EY23009C0, D03EY23017C0, D03EY23023C0 | 65% | 35d | 2011-09-12 | 2012-01-14 | 36.33d | 21.8d |  | MECHANICAL [5311.2 h]; Cost [286617 AED] | 286,617.06 | 186,301.09 | D03EY23015C0 | DT | C | 03 | EY | ME | 230 | 15 | BILL 5 | B05 | S2 | 2F | R00 | ACF07 | 230 |  | 70 | 2n | MEP |  |  |  |  |  |  |  |  | 65 | 60 |  |  |  |
| D03EY26013C0 |  | DT-03 ; 1st Fix, Inst of Cable Tray (Eye , Plastic) | 90d | 2011-07-10 A | 2011-11-14 | D03EY23001C0, D03EY27010C0 SS+10d, D03S107807C0, D03S307807C0 | 60% | 36d | 2011-06-30 | 2011-10-15 | 87.12d | 9d |  | ELECTRICAL [430.8 h]; Cost [23263.3 AED] | 23,263.34 | 13,958 | D03EY26013C0 | DT | C | 03 | EY | ME | 260 | 13 | BILL 5 | B05 | S2 | 1F | R00 | ACF04 | 260 |  | 88 | 1S | MEP | M1F |  |  |  |  |  |  |  |  |  |  |  |  |
| D03EY26009C0 |  | DT-03 ; 2nd Fix, Inst of Wall conduites (Eye , Plastic) | 54d | 2011-08-10 A | 2012-02-05 | D03EY09201C0 | 20% | 43.2d | 2012-01-14 | 2012-03-17 | 14.53d | 0d |  | ELECTRICAL [824.4 h]; Cost [42423.2 AED] | 42,423.24 | 8,484.65 | D03EY26009C0 | DT | C | 03 | EY | ME | 260 | 09 | BILL 5 | B05 | S2 | 2F | R00 | ACF07 | 260 |  | 25 | 2n | MEP |  |  |  |  |  |  |  |  | 20 | 0 |  |  |  |
| D03EY23008C0 |  | DT-03 ; 1st Fix, Inst of VCD's/FD's (Eye , Plastic) | 66d | 2011-09-05 A | 2012-04-01 | D03EY23023C0, D03EY05503C0 FF+18d | 5% | 62.7d | 2011-09-25 | 2011-12-15 | 51.02d | 36.5d |  | MECHANICAL [4312.8 h]; Cost [232964 AED] | 232,964.23 | 11,648.21 | D03EY23008C0 | DT | C | 03 | EY | ME | 230 | 08 | BILL 5 | B05 | S2 | 1F | R00 | ACF04 | 230 |  | 85 | 1S | MEP | M1F |  |  |  |  |  |  |  |  |  |  |  |  |
| D03EY23009C0 |  | DT-03 ; 2nd Fix, Inst of VAV'S CHW connection (Eye , Plastic) | 36d | 2011-09-05 A | 2012-03-07 | D03EY23017C0 | 10% | 32.4d | 2011-10-06 | 2011-11-20 | 36.33d | 0d |  | MECHANICAL [1684.8 h]; Cost [91006.1 AED] | 91,006.06 | 9,100.61 | D03EY23009C0 | DT | C | 03 | EY | ME | 230 | 09 | BILL 5 | B05 | S2 | 2F | R00 | ACF07 | 230 |  | 25 | 2n | MEP |  |  |  |  |  |  |  |  |  |  |  |  |  |
| D03EY05503C0 |  | DT-03 ; Ceiling Support for medical equipment (Eye , Plastic) | 20d | 2011-12-14 | 2012-01-08 | D03EY09201C0, DAFMI22002R20 FS+72d |  |  |  |  | 25.73d | 0d |  | SECONDARY STEEL [86 h]; STRUCTURAL STEEL [17 T(Fe)]; Cost |  |  | D03EY05503C0 | DT | C | 03 | EY | SW | 055 | 03 | BILL 5 | B05 | S2 | 03 | R00 | ACF03 | b |  |  |  |  |  |  |  |  |  |  | 335 | 962 |  |  |  |  |  |
| D03EY05511C0 |  | DT-03 ; Wall reinforcement for MEP/Medical (Eye , Plastic) | 24d | 2011-12-14 | 2012-01-12 | D03EY09201C0, DAFMI22002R02 FS+72d |  |  |  |  | 39.73d | 25.2d |  | SECONDARY STEEL [37 h]; Cost |  |  | D03EY05511C0 | DT | C | 03 | EY | SW | 055 | 11 | BILL 5 | B05 | S2 | 03 | R00 | ACF03 | b |  |  |  |  |  |  |  |  |  |  |  |  |  |  |  |  |  |
| D03EY22011C0 |  | DT-03 ; 2nd Fix, Drainage/Water pipe (wall) (Eye , Plastic) | 36d | 2011-12-14 | 2012-01-26 | D03EY09201C0, DAFMI22002R20 FS+72d |  |  |  |  | 21.73d | 7.2d |  | PLUMBING [1173.6 h]; Cost |  |  | D03EY22011C0 | DT | C | 03 | EY | ME | 220 | 11 | BILL 5 | B05 | S2 | 2F | R00 | ACF07 | 220 |  | 25 | 2n | MEP |  |  |  |  |  |  |  |  |  |  |  |  |  |
| D03EY22015C0 |  | DT-03 ; 2nd Fix, Medical Gas pipe (Eye , Plastic) | 36d | 2011-12-14 | 2012-01-26 | D03EY09201C0, D03EY22007C0 SS |  |  |  |  | 21.73d | 7.2d |  | PLUMBING [1616.4 h]; Cost |  |  | D03EY22015C0 | DT | C | 03 | EY | ME | 220 | 15 | BILL 5 | B05 | S2 | 2F | R00 | ACF07 | 220 |  | 30 | 2n | MEP |  |  |  |  |  |  |  |  |  |  |  |  |  |
| D03EY08103C0 |  | DT-03 ; Door Frames (Eye , Plastic) | 42d | 2011-12-15 | 2012-02-02 | D03EY09201C0 SS+14d, GNHE08101C0 FS+93d, D02PA08103C0 SS+3d |  |  |  |  | 48d | 0d |  | ASSORTED DOORS [566 h]; Cost |  |  | D03EY08103C0 | DT | C | 03 | EY | DO | 081 | 03 | BILL 5 | B05 | S2 | DR | R00 | ACF06 | 081 |  |  |  |  |  |  |  |  |  |  | 316 | 947 |  |  | 08 |  |  |
| D03EY01005C0 |  | DT-03 ; 2nd, Wall Inspection by Consultant (Eye , Plastic) | 6d | 2012-02-05 | 2012-02-12 | D03EY22011C0, D03EY22015C0, D03EY26009C0 |  |  |  |  | 14.53d | 0d |  | Labor General [1.2 h]; Cost |  |  | D03EY01005C0 | DT | C | 03 | EY | ME | 010 | 05 | BILL 5 | B05 | S2 | WI | R00 | ACF07 | 010 |  |  | 2n | MEP |  |  |  |  |  |  |  |  |  |  |  |  |  |
| D03EY09205C0 |  | DT-03 ; Partitions Closing (Eye , Plastic) | 48d | 2012-02-12 | 2012-04-08 | D03EY01005C0, D03EY05511C0, D03EY09203C0, D03EY22005C0, D03EY22019C0, DAFOA09206C1 FF, D03EY08103C0 FF, D03EY21117C0, DAFMI22002R20 FS+72d |  |  |  |  | 14.53d | 0d |  | PARTITIONS [803 m]; PARTITIONS [5968 h]; Cost |  |  | D03EY09205C0 | DT | C | 03 | EY | PT | 092 | 05 | BILL 5 | B05 | S2 | FF | R00 | ACF06 | 092 |  |  |  | GP | P2F |  |  |  |  |  | 315 | 946 |  |  |  |  |  |
| D03EY07103C0 |  | DT-03 ; Waterproofing (Eye , Plastic) | 12d | 2012-04-08 | 2012-04-22 | D03EY08103C0, D03EY09205C0 |  |  |  |  | 74.53d | 0d |  | THERMAL & MOISTURE [392 h]; THERMAL & MOISTURE [2608 m2]; Cost |  |  | D03EY07103C0 | DT | C | 03 | EY | FF | 071 | 03 | BILL 5 | B05 | S2 | 01 | R00 | ACF03 | 071 |  |  |  |  |  |  |  |  |  |  | 105 | 999 |  |  |  |  |  |
| D03EY09901C0 |  | DT-03 ; Wall Prime & 1st coat (Eye , Plastic) | 30d | 2012-04-08 | 2012-05-13 | D03EY09205C0 |  |  |  |  | 14.53d | 0d |  | WALL PAINT [1162 h]; WALL PAINT [1450 m2]; Cost |  |  | D03EY09901C0 | DT | C | 03 | EY | PA | 099 | 01 | BILL 5 | B05 | S2 | 01 | R00 | ACF06 | 099 |  |  |  |  |  |  |  |  |  |  | 328 | 956 |  |  |  |  |  |
| D03EY26005C0 |  | DT-03 ; 2nd Fix, Wiring for Power/Lighting/Emergency (Eye , Plastic) | 36d | 2012-04-08 | 2012-05-20 | D03EY09205C0 |  |  |  |  | 86.53d | 0d |  | ELECTRICAL [436.8 h]; Cost |  |  | D03EY26005C0 | DT | C | 03 | EY | ME | 260 | 05 | BILL 5 | B05 | S2 | 2F | R00 | ACF07 | 260 |  |  | 2n | MEP |  |  |  |  |  |  |  |  |  |  |  |  |  |
| D03EY26007C0 |  | DT-03 ; 2nd Fix, Cable Pulling (Eye , Plastic) | 42d | 2012-04-08 | 2012-05-27 | D03EY09201C0 SS+6d, D03EY09205C0 |  |  |  |  | 134.53d | 120d |  | ELECTRICAL [6634.8 h]; Cost |  |  | D03EY26007C0 | DT | C | 03 | EY | ME | 260 | 07 | BILL 5 | B05 | S2 | 2F | R00 | ACF07 | 260 |  | 25 | 2n | MEP |  |  |  |  |  |  |  |  |  |  |  |  |  |
| D03EY26011C0 |  | DT-03 ; 2nd Fix, Inst of Equipment (DB) (Eye , Plastic) | 48d | 2012-04-08 | 2012-06-03 | D03EY09205C0 |  |  |  |  | 80.53d | 0d |  | ELECTRICAL [4054.8 h]; Cost |  |  | D03EY26011C0 | DT | C | 03 | EY | ME | 260 | 11 | BILL 5 | B05 | S2 | 2F | R00 | ACF04 | 260 |  |  | 2n | MEP |  |  |  |  |  |  |  |  |  |  |  | E |  |
| D03EY26053C0 |  | DT-03 ; 2nd Fix, Wiring / Cabling (Eye , Plastic) | 36d | 2012-04-08 | 2012-05-20 | D03EY26009C0, D03EY09205C0 |  |  |  |  | 140.53d | 126d |  | ELECTRICAL [436.8 h]; Cost |  |  | D03EY26053C0 | DT | C | 03 | EY | ME | 260 | 53 | BILL 5 | B05 | S2 | 2F | R00 | ACF07 | 260 |  |  | 2n | MEP |  |  |  |  |  |  | 389 | 977 |  |  |  |  |  |
| D03EY27020C0 |  | DT-03 ; 2nd Fix, Inst of ELV Equipment (Panels) (Eye , Plastic) | 42d | 2012-04-08 | 2012-05-27 | D03EY09205C0 |  |  |  |  | 86.53d | 6d |  | ELECTRICAL [1723.2 h]; Cost |  |  | D03EY27020C0 | DT | C | 03 | EY | ME | 270 | 20 | BILL 5 | B05 | S2 | 2F | R00 | ACF04 | 270 |  |  | 2n | MEP |  |  |  |  |  |  |  |  |  |  |  | E |  |
| D03EY09305C0 |  | DT-03 ; Ceramic floor tile (Eye , Plastic) | 24d | 2012-04-22 | 2012-05-20 | D03EY07103C0 |  |  |  |  | 74.53d | 0d |  | CERAMIC FLOOR TILES [136 h]; CERAMIC FLOOR TILES [72 m2]; Cost |  |  | D03EY09305C0 | DT | C | 03 | EY | FF | 093 | 05 | BILL 5 | B05 | S2 | 02 | R00 | ACF06 | CT |  |  |  |  |  |  |  |  |  |  | 106 | 1000 |  |  |  |  |  |
| D03EY05501C0 |  | DT-03 ; Handrails & balustrade (Eye , Plastic) | 35.5d | 2012-05-13 | 2012-06-25 | D03EY09901C0, DZ9GZ05152R2 FF, DV09GZ05153R2 FF, DV10GZ05554R2 FF |  |  |  |  | 57.02d | 42.5d |  | SECONDARY STEEL [179 h]; Cost |  |  | D03EY05501C0 | DT | C | 03 | EY | SW | 055 | 01 | BILL 5 | B05 | S2 | 01 | R00 | ACF03 | a |  |  |  |  |  |  |  |  |  |  |  |  |  |  |  |  |  |
| D03EY09501C0 |  | DT-03 ; Ceiling Grid and Service Tile (Eye , Plastic) | 36d | 2012-05-13 | 2012-06-25 | D03EY05503C0, D03EY09205C0 SS+15d, D03EY21117C0, D03EY23008C0, D03EY23009C0, D03EY23015C0, D03EY27001C0, DAFMI22003R02 FS+72d, D03EY09901C0 |  |  |  |  | 14.53d | 0d |  | CEILING GRID FOR GYPSUM [3326.21 h]; CEILING GRID FOR GYPSUM [284.66 m2]; Cost |  |  | D03EY09501C0 | DT | C | 03 | EY | CE | 095 | 01 | BILL 5 | B05 | S2 | 01 | R00 | ACF06 | 095 |  |  |  |  |  |  |  |  |  |  | 323 | 952 |  |  |  |  |  |
| D03EY22025C0 |  | DT-03 ; Final Fix, Inst of Sanitary Ware (Eye , Plastic) | 48d | 2012-05-20 | 2012-07-16 | D03EY09205C0, D03EY09305C0, A10230 FS+148d |  |  |  |  | 74.53d | 0d |  | PLUMBING [1917.6 h]; Cost |  |  | D03EY22025C0 | DT | C | 03 | EY | ME | 220 | 25 | BILL 5 | B05 | S2 | FF | R00 | ACF07 | 220 |  |  | FF | MEP |  |  |  |  |  |  |  |  |  |  |  |  |  |
| D03EY26015C0 |  | DT-03 ; Final Fix, Termination & Gladding of Cables (Eye , Plastic) | 48d | 2012-05-20 | 2012-07-16 | D03EY26005C0 |  |  |  |  | 86.53d | 72d |  | ELECTRICAL [368.4 h]; Cost |  |  | D03EY26015C0 | DT | C | 03 | EY | ME | 260 | 15 | BILL 5 | B05 | S2 | FF | R00 | ACF07 | 260 |  |  | FF | MEP |  |  |  |  |  |  |  |  |  |  |  |  |  |
| D03EY09701C0 |  | DT-03 ; Wall finishes (ST, WD, WC) (Eye , Plastic) | 48d | 2012-06-03 | 2012-07-30 | D03EY26011C0, D03EY27020C0, DAFMI22003R02 FS+170d |  |  |  |  | 80.53d | 6d |  | ASSORTED WALL FINISH [1284 h]; ASSORTED WALL FINISH [1475 m2]; Cost |  |  | D03EY09701C0 | DT | C | 03 | EY | WF | 097 | 01 | BILL 5 | B05 | S2 | 01 | R00 | ACF06 | 097 |  |  |  |  |  |  |  |  |  |  | 105 | 1002 |  |  |  |  | R3 |
| D03EY09601C0 |  | DT-03 ; Flooring (Rubber & etc) (Eye , Plastic) | 42d | 2012-06-25 | 2012-08-13 | D03EY09901C0, D03EY09501C0, D03EY05501C0 FF |  |  |  |  | 14.53d | 0d |  | RUBBER FLOOR [232 h]; RUBBER FLOOR [575 m2]; Cost |  |  | D03EY09601C0 | DT | C | 03 | EY | FF | 096 | 01 | BILL 5 | B05 | S2 | 03 | R00 | ACF06 | RF |  |  |  |  |  |  |  |  |  |  | 326 | 955 |  |  |  |  |  |
| D03EY09905C0 |  | DT-03 ; Ceiling Prime & 1st coat (Eye , Plastic) | 36d | 2012-06-25 | 2012-08-06 | D03EY09501C0 |  |  |  |  | 80.4d | 0d |  | ASSORTED CEILING FINISH [121 h]; Cost |  |  | D03EY09905C0 | DT | C | 03 | EY | PA | 099 | 05 | BILL 5 | B05 | S2 | 01 | R00 | ACF06 | 099 |  |  |  |  |  |  |  |  |  |  | 330 | 958 |  |  |  |  |  |
| D03EY21115C0 |  | DT-03 ; 2nd Fix, Inst of Sprinkler droppers (Eye , Plastic) | 36d | 2012-06-25 | 2012-08-06 | D03EY09501C0 |  |  |  |  | 20.52d | 0d |  | MECHANICAL [2067.6 h]; Cost |  |  | D03EY21115C0 | DT | C | 03 | EY | ME | 211 | 15 | BILL 5 | B05 | S2 | 2F | R00 | ACF07 | 211 |  |  | 2n | MEP |  |  |  |  |  |  |  |  |  |  |  |  |  |
| D03EY23021C0 |  | DT-03 ; 2nd Fix, Inst of Flexible Duct & Plenum boxes (Eye , Plastic) | 36d | 2012-06-25 | 2012-08-06 | D03EY09205C0, D03EY09501C0 |  |  |  |  | 50.52d | 0d |  | MECHANICAL [274.8 h]; Cost |  |  | D03EY23021C0 | DT | C | 03 | EY | ME | 230 | 21 | BILL 5 | B05 | S2 | 2F | R00 | ACF07 | 230 |  |  | 2n | MEP |  |  |  |  |  |  |  |  |  |  |  |  |  |
| D03EY26017C0 |  | DT-03 ; Final Fix, Inst of Ceiling rose (Eye , Plastic) | 48d | 2012-06-25 | 2012-08-22 | D03EY09501C0 |  |  |  |  | 49.52d | 0d |  | ELECTRICAL [67.2 h]; Cost |  |  | D03EY26017C0 | DT | C | 03 | EY | ME | 260 | 17 | BILL 5 | B05 | S2 | FF | R00 | ACF07 | 260 |  |  | FF | MEP |  |  |  |  |  |  |  |  |  |  |  |  |  |
| D03EY27002C0 |  | DT-03 ; 2nd Fix, Wiring Droppers (Eye , Plastic) | 36d | 2012-06-25 | 2012-08-06 | D03EY09501C0 |  |  |  |  | 44.52d | 0d |  | ELECTRICAL [436.8 h]; Cost |  |  | D03EY27002C0 | DT | C | 03 | EY | ME | 270 | 02 | BILL 5 | B05 | S2 | 2F | R00 | ACF07 | 270 |  |  | 2n | MEP |  |  |  |  |  |  |  |  |  |  |  |  |  |
| D03EY23019C0 |  | DT-03 ; Final Fix, Inst of Grilles & Diffusers (Eye , Plastic) | 48d | 2012-07-02 | 2012-08-29 | D03EY09501C0, D03EY23021C0 SS+6d |  |  |  |  | 50.52d | 36d |  | MECHANICAL [2560.8 h]; Cost |  |  | D03EY23019C0 | DT | C | 03 | EY | ME | 230 | 19 | BILL 5 | B05 | S2 | FF | R00 | ACF07 | 230 |  |  | FF | MEP |  |  |  |  |  |  |  |  |  |  |  |  |  |
| D03EY27030C0 |  | DT-03 ; Final Fix, Inst of ELV device (Detector/Speaker) (Eye , Plastic) | 54d | 2012-07-02 | 2012-09-05 | D03EY09501C0, D03EY27002C0 SS+6d |  |  |  |  | 44.52d | 30d |  | ELECTRICAL [2152.8 h]; Cost |  |  | D03EY27030C0 | DT | C | 03 | EY | ME | 270 | 30 | BILL 5 | B05 | S2 | FF | R00 | ACF07 | 270 |  |  | FF | MEP |  |  |  |  |  |  |  |  |  |  |  |  |  |
| D03EY26003C0 |  | DT-03 ; Final Fix, Inst of Light fittings (Eye , Plastic) | 48d | 2012-07-03 | 2012-08-30 | D03EY09501C0, D03EY26017C0 SS+7d |  |  |  |  | 49.52d | 35d |  | ELECTRICAL [6626.4 h]; Cost |  |  | D03EY26003C0 | DT | C | 03 | EY | ME | 260 | 03 | BILL 5 | B05 | S2 | FF | R00 | ACF07 | 260 |  |  | FF | MEP |  |  |  |  |  |  |  |  |  |  |  |  |  |
| D03EY22021C0 |  | DT-03 ; Final Fix, Terminate Sanitary Ware & Appliances (Eye , Plastic) | 48d | 2012-07-16 | 2012-09-12 | D03EY22011C0, D03EY22025C0 |  |  |  |  | 74.53d | 60d |  | PLUMBING [1917.6 h]; Cost |  |  | D03EY22021C0 | DT | C | 03 | EY | ME | 220 | 21 | BILL 5 | B05 | S2 | FF | R00 | ACF07 | 220 |  |  | FF | MEP |  |  |  |  |  |  |  |  |  |  |  |  |  |
| D03EY09903C0 |  | DT-03 ; Wall Final Paint (Eye , Plastic) | 36d | 2012-08-06 | 2012-09-19 | D03EY09901C0, D03EY09905C0 |  |  |  |  | 80.4d | 0d |  | WALL PAINT [627 h]; WALL PAINT [781 m2]; Cost |  |  | D03EY09903C0 | DT | C | 03 | EY | PA | 099 | 03 | BILL 5 | B05 | S2 | 02 | R00 | ACF06 | 099 |  |  |  |  |  |  |  |  |  |  | 329 | 957 |  |  |  |  |  |
| D03EY11001C0 |  | DT-03 ; Wall Protection (WP, CG, WG, FCG) (Eye , Plastic) | 24d | 2012-08-06 | 2012-09-05 | D03EY09701C0, D03EY09903C0 SS |  |  |  |  | 92.4d | 77.88d |  | FF&E [1571 h]; Cost |  |  | D03EY11001C0 | DT | C | 03 | EY | WF | 110 | 01 | BILL 5 | B05 | S2 | 03 | R00 | ACF08 | b |  |  |  |  |  |  |  |  |  |  | 326 | 1001 |  |  |  |  |  |
| D03EY21113C0 |  | DT-03 ; Final Fix, Inst of Sprinklers head/ Extinguisher (Eye , Plastic) | 48d | 2012-08-06 | 2012-10-03 | D03EY09501C0, D03EY21115C0 |  |  |  |  | 20.52d | 6d |  | MECHANICAL [403.2 h]; Cost |  |  | D03EY21113C0 | DT | C | 03 | EY | ME | 211 | 13 | BILL 5 | B05 | S2 | FF | R00 | ACF07 | 211 |  |  | FF | MEP |  |  |  |  |  |  |  |  |  |  |  |  |  |
| D03EY06101C0 |  | DT-03 ; Wood / caseworks (Eye , Plastic) | 54d | 2012-08-13 | 2012-10-17 | D03CO04415C0, D03EY09501C0, D03EY09901C0, D03CO04437C0, DAFWA00111M0, CAFWA00113M0, DAFMI22003R02 FS+190d, D03EY09601C0 |  |  |  |  | 14.53d | 0d |  | WOOD WORK/CASEWORK [368.04 no]; WOOD WORK/CASEWORK [3086 h]; Cost |  |  | D03EY06101C0 | DT | C | 03 | EY | WO | 061 | 01 | BILL 5 | B05 | S2 | WW | R00 | ACF06 | 061 |  |  |  |  |  |  |  |  |  |  | 332 | 960 |  |  |  |  |  |
| D03EY06102C0 |  | DT-03 ; Head Wall (Eye , Plastic) | 30.5d | 2012-08-13 | 2012-09-20 | D03CO04415C0, D03EY09501C0, D03EY06101C0 SS, DAFWA00111M0, DAFMI22003R02 FS+190d |  |  |  |  | 38.02d | 23.5d |  | WOOD WORK/CASEWORK [1514 h]; Cost |  |  | D03EY06102C0 | DT | C | 03 | EY | WO | 061 | 02 | BILL 5 | B05 | S2 | WW | R00 | ACF06 | 061 |  |  |  |  |  |  |  |  |  |  | 332 | 960 |  |  |  |  |  |
| D03EY08107C0 |  | DT-03 ; Doors (Eye , Plastic) | 42d | 2012-08-13 | 2012-10-03 | D03EY08103C0, D03EY09901C0, D03EY09601C0 |  |  |  |  | 46.9d | 0d |  | ASSORTED DOORS [910 h]; ASSORTED DOORS [91 no]; Cost |  |  | D03EY08107C0 | DT | C | 03 | EY | DO | 081 | 07 | BILL 5 | B05 | S2 | DR | R00 | ACF06 | 081 |  |  |  |  |  |  |  |  |  |  | 317 | 948 |  |  | 08 |  |  |
| D03EY11005C0 |  | DT-03 ; Utility belt (Eye , Plastic) | 24d | 2012-08-22 | 2012-09-19 | D03EY06101C0 SS+6d, D03EY09205C0 |  |  |  |  | 14.53d | 0d |  | FF&E [64 h]; FF&E [33.52 no]; Cost |  |  | D03EY11005C0 | DT | C | 03 | EY | WO | 110 | 05 | BILL 5 | B05 | S2 | 05 | R00 | ACF08 | e |  |  |  |  |  |  |  |  |  |  |  |  |  |  |  |  |  |
| D03EY22029C0 |  | DT-03 ; Final Fix, Medical Gas pipe (Eye , Plastic) | 18d | 2012-09-19 | 2012-10-10 | D03EY09501C0, D03EY11005C0 |  |  |  |  | 14.53d | 0d |  | PLUMBING [1616.4 h]; Cost |  |  | D03EY22029C0 | DT | C | 03 | EY | ME | 220 | 29 | BILL 5 | B05 | S2 | FF | R00 | ACF07 | 220 |  |  | FF | MEP |  |  |  |  |  |  |  |  |  |  |  |  |  |
| D03EY08709C0 |  | DT-03 ; Ironmongery (Eye , Plastic) | 21.5d | 2012-10-03 | 2012-10-31 | D03EY08107C0 |  |  |  |  | 46.9d | 32.38d |  | IRONMONGERY [390 h]; IRONMONGERY [39 no]; Cost |  |  | D03EY08709C0 | DT | C | 03 | EY | DO | 087 | 09 | BILL 5 | B05 | S2 | IM | R00 | ACF06 | 087 |  |  |  |  |  |  |  |  |  |  | 322 | 951 |  |  | 08 |  |  |
| D03EY01006C0 |  | DT-03 ; 2nd, Ceiling Inspection by Consultants (Eye , Plastic) | 6d | 2012-10-10 | 2012-10-17 | D03EY21115C0, D03EY23009C0, D03EY23015C0, D03EY27002C0, D03EY09501C0, D03EY21113C0, D03EY22029C0, D03EY23019C0, D03EY26003C0, D03EY26017C0, D03EY27030C0, D03EY26015C0 |  |  |  |  | 14.53d | 0d |  | Labor General [1.2 h]; Cost |  |  | D03EY01006C0 | DT | C | 03 | EY | ME | 010 | 06 | BILL 5 | B05 | S2 | CI | R00 | ACF07 | 010 |  |  | 2n | MEP |  |  |  |  |  |  |  |  |  |  |  |  |  |
| D03EY09503C0 |  | DT-03 ; Ceiling closure - ACT/Gypsum (Eye , Plastic) | 18d | 2012-10-17 | 2012-11-10 | D03EY01006C0, D03EY21115C0, D03EY26005C0, D03EY27001C0, D03EY27002C0, DAFOA09505C1 FF, D03EY06101C0, D03EY09701C0, D03EY06102C0, D03EY23021C0, D03EY26053C0, D03EY26007C0 |  |  |  |  | 14.53d | 0d |  | ASSORTED CEILING FINISH [674.04 h]; CEILING GYPSUM [93.28 h]; ASSORTED CEILING FINISH [1096 m2]; CEILING GYPSUM [285 m2]; Cost |  |  | D03EY09503C0 | DT | C | 03 | EY | CE | 095 | 03 | BILL 5 | B05 | S2 | 02 | R00 | ACF06 | 095 |  |  |  |  |  |  |  |  |  |  | 324 | 953 |  |  |  |  |  |
| D03EY09907C0 |  | DT-03 ; Ceiling Final paint (Eye , Plastic) | 12d | 2012-11-10 | 2012-11-25 | D03EY09601C0, D03EY09905C0, D03EY09503C0 |  |  |  |  | 26.4d | 11.88d |  | ASSORTED CEILING FINISH [65 h]; Cost |  |  | D03EY09907C0 | DT | C | 03 | EY | PA | 099 | 07 | BILL 5 | B05 | S2 | 02 | R00 | ACF06 | 099 |  |  |  |  |  |  |  |  |  |  | 331 | 959 |  |  |  |  |  |
| D03EY11003C0 |  | DT-03 ; FF & E (Eye , Plastic) | 12d | 2012-11-10 | 2012-11-25 | D03EY09601C0, D03EY09503C0 |  |  |  |  | 26.4d | 11.88d |  | FF&E [45 h]; FF&E [24.05 no]; Cost |  |  | D03EY11003C0 | DT | C | 03 | EY | WO | 110 | 03 | BILL 5 | B05 | S2 | 04 | R00 | ACF08 | a |  |  |  |  |  |  |  |  |  |  | 333 | 961 |  |  |  |  |  |
| D03EY22027C0 |  | DT-03 ; Final Fix, Inst of All drain (Eye , Plastic) | 12d | 2012-11-10 | 2012-11-25 | D03EY09305C0, D03EY09503C0 |  |  |  |  | 14.53d | 0d |  | PLUMBING [1173.6 h]; Cost |  |  | D03EY22027C0 | DT | C | 03 | EY | ME | 220 | 27 | BILL 5 | B05 | S2 | FF | R00 | ACF07 | 220 |  |  | FF | MEP |  |  |  |  |  |  |  |  |  |  |  |  |  |
| D03EY26019C0 |  | DT-03 ; Final Fix, Inst of Switch/Sockets (Eye , Plastic) | 12d | 2012-11-10 | 2012-11-25 | D03EY09901C0, D03EY09503C0 |  |  |  |  | 14.53d | 0d |  | ELECTRICAL [610.8 h]; Cost |  |  | D03EY26019C0 | DT | C | 03 | EY | ME | 260 | 19 | BILL 5 | B05 | S2 | FF | R00 | ACF07 | 260 |  |  | FF | MEP |  |  |  |  |  |  |  |  |  |  |  |  |  |

| ID | WBS | Activity | Duration | Start | Finish | Predecessors | Complete | Remaining | Planned start | Planned finish | Total float | Free float | Calendar | Resources | Cost | Actual cost | change id | CCAD BUILDING(SET) | CCAD PHASE(SET) | CCAD FLOOR(SET) | CCAD ZONE(SET) | CCAD WORK(SET) | CCAD SECTION(SET) | CCAD SERIAL No.(SET) | CCAD CBS(SET) | CCAD BILL(SET) | CCAD HANDOVER(SET) | CCAD TAG(SET) | CCAD REV(SET) | CCADACF (SET) | CCAD SSCF | RENZ % COMPLETE | July2011 Target% Complete | Claimed This Month | CCAD SUB ZONE MEP(SET) | CCAD CSA | Act Selector % | user_number8 | user_integer1 | user_integer2 | user_number7 | Change Order # | NEW ACTIVITY ID | P_811 | P_711 | R3 Partitions | CCAD DIVISION(SET) | CCAD MEQ | R3 Finish |
| --- | --- | --- | --- | --- | --- | --- | --- | --- | --- | --- | --- | --- | --- | --- | --- | --- | --- | --- | --- | --- | --- | --- | --- | --- | --- | --- | --- | --- | --- | --- | --- | --- | --- | --- | --- | --- | --- | --- | --- | --- | --- | --- | --- | --- | --- | --- | --- | --- | --- |
|  | 10 | **Precommissioning Tesing & snagging (Eye Or, Plastic Or, Induct, Prep/Recv)** |  | 2012-11-25 | 2013-01-07 |  |  |  |  |  |  |  |  |  |  |  |  |  |  |  |  |  |  |  |  |  |  |  |  |  |  |  |  |  |  |  |  |  |  |  |  |  |  |  |  |  |  |  |  |
| D03TS01806C0 |  | DT-03 ; MEP de-snag, FIREM sign-off | 11.88d | 2012-11-25 | 2012-12-10 | D03EY22025C0, D03EY22027C0, D03EY26015C0, D03EY22021C0, D03EY21113C0, D03EY23019C0, D03EY22029C0, D03EY26017C0, D03EY26003C0, D03EY27030C0, D03EY26019C0, D03EY11005C0 |  |  |  |  | 14.53d | 0d |  | TESTING & COMMISSIONING [1275 h]; Cost |  |  | D03TS01801C0 | DT | C | 03 | TS | SC | 018 | 01 | BILL 5 | B05 | S2 | 01 | R00 | ACF07 | 018 |  |  |  |  |  |  |  |  |  |  |  |  |  |  |  |  |  |  |
| D03TS01811C0 |  | DT-03 ; Touch-up & Clean / JV inspection /CIR /De-snag | 18d | 2012-12-10 | 2012-12-31 | D03EY06101C0, D03EY06102C0, D03EY08709C0, D03EY09305C0, D03EY09601C0, D03EY09701C0, D03EY09903C0, D03EY09907C0, D03EY11001C0, D03EY11003C0, D03TS01806C0, D03EY05501C0, D03EY09503C0 |  |  |  |  | 14.53d | 0d |  | TESTING & COMMISSIONING [213 h]; Cost |  |  | D03TS01802C0 | DT | C | 03 | TS | SC | 018 | 02 | BILL 5 | B05 | S2 | 02 | R00 | ACF07 | 018 |  |  |  |  |  |  |  |  |  |  |  |  |  |  |  |  |  |  |
| D03TS01816C0 |  | DT-03 ; Consultant's final de-snag inspection | 7d | 2012-12-31 | 2013-01-07 | D03TS01811C0 |  |  |  |  | 17.52d | 6.5d | R00-C02, Calendar day | Labor General [1 h]; Cost |  |  | D03TS01803C0 | DT | C | 03 | TS | SC | 018 | 03 | BILL 5 | B05 | S2 | 03 | R00 | ACF07 | 018 |  |  |  |  |  |  |  |  |  |  |  |  |  |  |  |  |  |  |
|  | 06 | **Lobby, Wait, Corridor, Recept** |  | 2011-03-31 | 2012-12-29 |  |  |  |  |  |  |  |  |  |  |  |  |  |  |  |  |  |  |  |  |  |  |  |  |  |  |  |  |  |  |  |  |  |  |  |  |  |  |  |  |  |  |  |  |
| D03PA21111C0 |  | DT-03 ; 1st Fix, Inst of Sprinkler main pipe (Public Area) | 250d | 2011-03-31 A | 2011-10-05 | D03PA22005C0 SS+7d, D03PA23001C0 | 98% | 5d | 2011-06-18 | 2012-04-15 | 61.6d | 0d |  | MECHANICAL [981.6 h]; Cost [53543.7 AED] | 53,543.69 | 52,472.82 | D03PA21111C0 | DT | C | 03 | PA | ME | 211 | 11 | BILL 5 | B05 | S2 | 1F | R00 | ACF04 | 211 | 50 | 98 | 21749.33 | 1S | MEP | M1F |  |  |  |  |  |  |  |  |  |  |  |  |
| D03PA22019C0 |  | DT-03 ; 1st Fix, Inst of Drainage pipe (ceiling) (Public Area) | 250d | 2011-03-31 A | 2011-10-05 | D03PA23001C0, D03PA26013C0 SS | 98% | 5d | 2011-05-24 | 2012-03-21 | 61.6d | 0d |  | PLUMBING [1173.6 h]; Cost [61888.2 AED] | 61,888.15 | 60,650.39 | D03PA22019C0 | DT | C | 03 | PA | ME | 220 | 19 | BILL 5 | B05 | S2 | 1F | R00 | ACF04 | 220 | 80 | 98 | 3675.1 | 1S | MEP | M1F |  |  |  |  |  |  |  |  |  |  |  |  |
| D03PA23001C0 |  | DT-03 ; 1st Fix, Inst. of Supports for MEP (Public Area) | 27d | 2011-04-07 A | 2011-05-31 A | D03S107807C0 SS, D03S207807C0 SS, D03S307807C0 SS | 100% |  | 2011-03-28 | 2011-04-27 |  |  |  | MECHANICAL [1338 h]; Cost [75432.9 AED] | 75,432.94 | 75,432.94 | D03PA23001C0 | DT | C | 03 | PA | ME | 230 | 01 | BILL 5 | B05 | S2 | 1F | R00 | ACF04 | 230 | 98 |  | 1750.27 | 1S | MEP | M1F |  |  |  |  |  |  |  |  |  |  |  |  |
| D03PA09201C0 |  | DT-03 ; Metal Studs (Public Area) | 90d | 2011-05-15 A | 2011-11-17 | D03PA23001C0 SS+12d, DAFMI09202R02 FS+65d | 77% | 20.7d | 2011-05-31 | 2011-09-15 | 10.03d | 0d |  | PARTITIONS [4359 h]; PARTITIONS - Metal Studs [589 m]; Cost |  |  | D03PA09201C0 | DT | C | 03 | PA | PT | 092 | 01 | BILL 5 | B05 | S2 | 1F | R00 | ACF06 | 092 | 20 |  | 115146.83 |  | GP | PMS | 0 | 0 | 0 | 0 | 313 | 944 | 70 | 66 | R3 |  |  |  |
| D03PA09203C0 |  | DT-03 ; Partitions early wall & 1st face (Public Area) | 90d | 2011-05-15 A | 2011-11-24 | D03PA09201C0 SS+12d, D03PA21111C0, D03PA22019C0 FF, D03PA23017C0 FF, D03PA23023C0 FF | 70% | 27d | 2011-06-14 | 2011-09-29 | 78d | 56d |  | PARTITIONS [589 m]; PARTITIONS [3417 h]; Cost |  |  | D03PA09203C0 | DT | C | 03 | PA | PT | 092 | 03 | BILL 5 | B05 | S2 | 2F | R00 | ACF06 | 092 | 5 |  | 44331.53 |  | GP | P1F | 0 | 0 | 0 | 0 | 314 | 945 | 50 | 27 |  |  |  |  |
| D03PA21117C0 |  | DT-03 ; 1st Fix, Inst of Sprinkler branch pipe (Public Area) | 250d | 2011-05-15 A | 2011-12-05 | D03PA09201C0, D03PA21111C0 | 95% | 12.5d | 2011-08-02 | 2012-05-30 | 107.8d | 85.8d |  | MECHANICAL [1441.2 h]; Cost [78749.8 AED] | 78,749.79 | 74,812.3 | D03PA21117C0 | DT | C | 03 | PA | ME | 211 | 17 | BILL 5 | B05 | S2 | 1F | R00 | ACF04 | 211 | 50 | 95 | 31951.96 | 1S | MEP | M1F |  |  |  |  |  |  |  |  |  |  |  |  |
| D03PA23017C0 |  | DT-03 ; 1st Fix, Inst of CHW pipe (Public Area) | 150d | 2011-05-15 A | 2011-11-03 | D03PA21111C0 SS+4d, D03PA23001C0 | 80% | 30d | 2011-07-07 | 2012-01-08 | 61.6d | 0d |  | MECHANICAL [6325.2 h]; Cost [345418 AED] | 345,418.28 | 276,334.63 | D03PA23017C0 | DT | C | 03 | PA | ME | 230 | 17 | BILL 5 | B05 | S2 | 1F | R00 | ACF04 | 230 | 20 | 90 |  | 1S | MEP | M1F |  |  |  |  |  |  |  |  |  |  |  |  |
| D03PA23023C0 |  | DT-03 ; 1st Fix, Inst of Main Ducting (Public Area) | 150d | 2011-05-15 A | 2011-11-03 | D03PA23001C0, D03PA23017C0 SS+7d | 80% | 30d | 2011-07-16 | 2012-01-16 | 66.3d | 0d |  | MECHANICAL [11402.4 h]; Cost [622619 AED] | 622,619.08 | 498,095.27 | D03PA23023C0 | DT | C | 03 | PA | ME | 230 | 23 | BILL 5 | B05 | S2 | 1F | R00 | ACF04 | 230 | 40 | 95 | 361093.74 | 1S | MEP | M1F |  |  |  |  |  |  |  |  |  |  |  |  |
| D03PA26001C0 |  | DT-03 ; 1st Fix, Inst of Trunking/Conduiting (Public Area) | 90d | 2011-05-15 A | 2011-11-24 | D03PA23001C0, D03S107807C0, D03S207807C0, D03S307807C0 | 50% | 45d | 2011-06-02 | 2011-09-19 | 61.6d | 0d |  | ELECTRICAL [824.4 h]; Cost [42423.2 AED] | 42,423.24 | 21,211.62 | D03PA26001C0 | DT | C | 03 | PA | ME | 260 | 01 | BILL 5 | B05 | S2 | 1F | R00 | ACF04 | 260 | 10 | 95 | 39989.3 | 1S | MEP | M1F |  |  |  |  |  |  |  |  |  |  |  |  |
| D03PA27010C0 |  | DT-03 ; 1st Fix, Inst of Trunking for ELV system (Public Area) | 90d | 2011-05-15 A | 2011-11-24 | D03PA23001C0, D03PA26001C0 SS+12d, D03S107807C0, D03S207807C0, D03S307807C0 | 50% | 45d | 2011-06-16 | 2011-10-03 | 61.6d | 0d |  | ELECTRICAL [1689.6 h]; Cost [88597.9 AED] | 88,597.89 | 44,298.95 | D03PA27010C0 | DT | C | 03 | PA | ME | 270 | 10 | BILL 5 | B05 | S2 | 1F | R00 | ACF04 | 270 | 10 | 95 | 82227.33 | 1S | MEP | M1F |  |  |  |  |  |  |  |  |  |  |  |  |
| D03PA22005C0 |  | DT-03 ; 1st Fix, Inst of Water supply pipe (ceiling) (Public Area) | 90d | 2011-05-31 A | 2011-11-24 | D03PA22019C0 SS+14d, D03PA23001C0 | 50% | 45d | 2011-05-31 | 2011-09-17 | 61.6d | 0d |  | PLUMBING [4896 h]; Cost [264473 AED] | 264,473.49 | 132,236.74 | D03PA22005C0 | DT | C | 03 | PA | ME | 220 | 05 | BILL 5 | B05 | S2 | 1F | R00 | ACF04 | 220 |  | 88 |  | 1S | MEP | M1F |  |  |  |  |  |  |  |  |  |  |  |  |
| D03PA26013C0 |  | DT-03 ; 1st Fix, Inst of Cable Tray (Public Area) | 90d | 2011-05-31 A | 2011-11-24 | D03PA23001C0, D03PA27010C0 SS+10d, D03S107807C0, D03S207807C0, D03S307807C0 | 50% | 45d | 2011-05-31 | 2011-09-17 | 61.6d | 0d |  | ELECTRICAL [430.8 h]; Cost [23263.3 AED] | 23,263.34 | 11,631.67 | D03PA26013C0 | DT | C | 03 | PA | ME | 260 | 13 | BILL 5 | B05 | S2 | 1F | R00 | ACF04 | 260 |  | 95 |  | 1S | MEP | M1F |  |  |  |  |  |  |  |  |  |  |  |  |
| D03PA27001C0 |  | DT-03 ; 1st Fix, Wiring/ Cabling work (Public Area) | 84d | 2011-06-14 A | 2012-02-06 | D03PA26001C0, D03PA26013C0, D03PA27010C0 | 30% | 58.8d | 2011-08-13 | 2011-11-24 | 91.2d | 69.2d |  | ELECTRICAL [436.8 h]; Cost [21894.9 AED] | 21,894.91 | 6,568.47 | D03PA27001C0 | DT | C | 03 | PA | ME | 270 | 01 | BILL 5 | B05 | S2 | 1F | R00 | ACF04 | 270 |  | 90 | 23213.4 | 1S | MEP | M1F |  |  |  |  |  |  |  |  |  |  |  |  |
| D03PA23015C0 |  | DT-03 ; 2nd Fix, Insulation of CHW pipe & Duct (Public Area) | 100d | 2011-08-10 A | 2012-01-29 | D03PA23009C0, D03PA23017C0, D03PA23023C0 | 65% | 35d | 2011-10-18 | 2012-02-19 | 61.6d | 39.6d |  | MECHANICAL [5311.2 h]; Cost [286617 AED] | 286,617.06 | 186,301.09 | D03PA23015C0 | DT | C | 03 | PA | ME | 230 | 15 | BILL 5 | B05 | S2 | 2F | R00 | ACF07 | 230 |  | 85 |  | 2n | MEP |  |  |  |  |  |  |  | 65 | 0 |  |  |  |  |
| D03PA40302C0 |  | DT-03 ; 2nd Fix, Pneumatic tube (Public Area) | 60d | 2011-08-10 A | 2012-01-09 | D03PA09201C0 | 30% | 42d | 2011-11-10 | 2012-01-22 | 36.3d | 14.3d |  | MECHANICAL [5653.2 h]; Cost [291897 AED] | 291,897.23 | 87,569.17 | C03E140302C0 | DT | C | 03 | PA | ME | 403 | 02 | BILL 5 | B05 | S2 | 2F | R00 | ACF07 | 403 |  | 25 |  | 2n | MEP |  |  |  |  |  |  |  | 30 | 0 |  |  |  |  |
| D03PA23008C0 |  | DT-03 ; 1st Fix, Inst of VCD's/FD's (Public Area) | 66d | 2011-09-05 A | 2012-01-23 | D03PA23023C0 | 5% | 62.7d | 2011-10-06 | 2011-12-27 | 66.3d | 44.3d |  | MECHANICAL [4312.8 h]; Cost [232964 AED] | 232,964.23 | 11,648.21 | D03PA23008C0 | DT | C | 03 | PA | ME | 230 | 08 | BILL 5 | B05 | S2 | 1F | R00 | ACF04 | 230 |  | 60 |  | 1S | MEP | M1F |  |  |  |  |  |  |  |  |  |  |  |  |
| D03PA23009C0 |  | DT-03 ; 2nd Fix, Inst of VAV'S CHW connection (Public Area) | 36d | 2011-09-05 A | 2011-12-18 | D03PA23017C0 | 10% | 32.4d | 2011-10-06 | 2011-11-20 | 61.6d | 0d |  | MECHANICAL [1684.8 h]; Cost [91006.1 AED] | 91,006.06 | 9,100.61 | D03PA23009C0 | DT | C | 03 | PA | ME | 230 | 09 | BILL 5 | B05 | S2 | 2F | R00 | ACF07 | 230 |  | 25 |  | 2n | MEP |  |  |  |  |  |  |  |  |  |  |  |  |  |
| D03PA26009C0 |  | DT-03 ; 2nd Fix, Inst of Wall conduites (Public Area) | 36d | 2011-11-17 | 2012-01-02 | D03PA09201C0 |  |  |  |  | 42.3d | 20.3d |  | ELECTRICAL [824.4 h]; Cost |  |  | D03PA26009C0 | DT | C | 03 | PA | ME | 260 | 09 | BILL 5 | B05 | S2 | 2F | R00 | ACF07 | 260 |  | 25 |  | 2n | MEP |  |  |  |  |  |  |  |  |  |  |  |  |  |
| D03PA22011C0 |  | DT-03 ; 2nd Fix, Drainage/Water pipe (wall) (Public Area) | 36d | 2011-12-14 | 2012-01-25 | D03PA09201C0, DAFMI22002R02 FS+72d |  |  |  |  | 22d | 0d |  | PLUMBING [1173.6 h]; Cost |  |  | D03PA22011C0 | DT | C | 03 | PA | ME | 220 | 11 | BILL 5 | B05 | S2 | 2F | R00 | ACF07 | 220 |  | 25 |  | 2n | MEP |  |  |  |  |  |  |  |  |  |  |  |  |  |
| D03PA08103C0 |  | DT-03 ; Door Frames (Public Area) | 42d | 2011-12-26 | 2012-02-14 | D03PA09201C0, GNHE08101C0 FS+93d, D03G208103C0 SS+3d |  |  |  |  | 48d | 0d |  | ASSORTED DOORS [415 h]; Cost |  |  | D03PA08103C0 | DT | C | 03 | PA | DO | 081 | 03 | BILL 5 | B05 | S2 | DF | R00 | ACF06 | 081 |  |  |  |  |  |  |  |  |  |  | 316 | 947 |  |  |  | 08 |  |  |
| D03PA01005C0 |  | DT-03 ; 2nd, Wall Inspection by Consultant (Public Area) | 6d | 2012-01-26 | 2012-02-01 | D03PA22011C0, D03PA26009C0, D03PA40302C0 |  |  |  |  | 22d | 0d |  | Labor General [1.2 h]; Cost |  |  | D03PA01005C0 | DT | C | 03 | PA | ME | 010 | 05 | BILL 5 | B05 | S2 | WI | R00 | ACF07 | 010 |  | 25 |  | 2n | MEP |  |  |  |  |  |  |  |  |  |  |  |  |  |
| D03PA09205C0 |  | DT-03 ; Partitions Closing (Public Area) | 36d | 2012-02-02 | 2012-03-15 | D03PA01005C0, D03PA09203C0, D03PA22005C0, D03PA22019C0, DAFOA09206C1 FF, DAFMI22002R02 FS+72d, D03PA08103C0 FF, D03PA21117C0 FF, D03PA23009C0 FF, D03PA23008C0 FF, D03PA23015C0 FF |  |  |  |  | 22d | 0d |  | PARTITIONS [589 m]; PARTITIONS [4376 h]; Cost |  |  | D03PA09205C0 | DT | C | 03 | PA | PT | 092 | 05 | BILL 5 | B05 | S2 | FF | R00 | ACF06 | 092 |  |  |  |  | GP | P2F |  |  |  |  | 315 | 946 |  |  | R3 |  |  |  |
| D03PA09901C0 |  | DT-03 ; Wall Prime & 1st coat (Public Area) | 36d | 2012-03-17 | 2012-04-26 | D03PA09205C0, D03CO04455C0 |  |  |  |  | 22d | 0d |  | WALL PAINT [74 h]; WALL PAINT [91 m2]; Cost |  |  | D03PA09901C0 | DT | C | 03 | PA | PA | 099 | 01 | BILL 5 | B05 | S2 | 01 | R00 | ACF06 | 099 |  |  |  |  |  |  |  |  |  |  | 328 | 956 |  |  |  |  |  |  |
| D03PA26005C0 |  | DT-03 ; 2nd Fix, Wiring for Power/Lighting/Emergency (Public Area) | 36d | 2012-03-17 | 2012-04-26 | D03PA09205C0 |  |  |  |  | 106d | 0d |  | ELECTRICAL [436.8 h]; Cost |  |  | D03PA26005C0 | DT | C | 03 | PA | ME | 260 | 05 | BILL 5 | B05 | S2 | 2F | R00 | ACF07 | 260 |  |  |  | 2n | MEP |  |  |  |  |  |  |  |  |  |  |  |  |  |
| D03PA26007C0 |  | DT-03 ; 2nd Fix, Cable Pulling (Public Area) | 42d | 2012-03-17 | 2012-05-03 | D03PA09201C0, D03PA09205C0 |  |  |  |  | 154d | 132d |  | ELECTRICAL [6634.8 h]; Cost |  |  | D03PA26007C0 | DT | C | 03 | PA | ME | 260 | 07 | BILL 5 | B05 | S2 | 2F | R00 | ACF07 | 260 |  | 25 |  | 2n | MEP |  |  |  |  |  |  |  |  |  |  |  |  |  |
| D03PA26011C0 |  | DT-03 ; 2nd Fix, Inst of Equipment (DB) (Public Area) | 48d | 2012-03-17 | 2012-05-10 | D03PA09205C0 |  |  |  |  | 100d | 66d |  | ELECTRICAL [4054.8 h]; Cost |  |  | D03PA26011C0 | DT | C | 03 | PA | ME | 260 | 11 | BILL 5 | B05 | S2 | 2F | R00 | ACF04 | 260 |  |  |  | 2n | MEP |  |  |  |  |  |  |  |  |  |  |  | E |  |
| D03PA26053C0 |  | DT-03 ; 2nd Fix, Wiring / Cabling (Public Area) | 36d | 2012-03-17 | 2012-04-26 | D03PA26009C0, D03PA09205C0 |  |  |  |  | 160d | 138d |  | ELECTRICAL [436.8 h]; Cost |  |  | D03PA26053C0 | DT | C | 03 | PA | ME | 260 | 53 | BILL 5 | B05 | S2 | 2F | R00 | ACF07 | 260 |  |  |  | 2n | MEP |  |  |  |  |  | 389 | 977 |  |  |  |  |  |  |
| D03PA05501C0 |  | DT-03 ; Handrails & balustrade (Public Area) | 36d | 2012-04-28 | 2012-06-07 | D03PA09901C0, DAFT805509C0, DAFT905509C0, DAFT305509C0, DAFT105509C0, DAFT1005509C0, DAFT2205509C0, DAFT505509C0 |  |  |  |  | 105d | 48d |  | SECONDARY STEEL [131 h]; Cost |  |  | D03PA05501C0 | DT | C | 03 | PA | SW | 055 | 01 | BILL 5 | B05 | S2 | 01 | R00 | ACF03 | a |  |  |  |  |  |  |  |  |  |  |  |  |  |  |  |  |  |  |
| D03PA09501C0 |  | DT-03 ; Ceiling Grid and Service Tile (Public Area) | 36d | 2012-04-28 | 2012-06-07 | D03PA09205C0 SS+15d, D03PA21117C0, D03PA23008C0, D03PA23009C0, D03PA23015C0, D03PA27001C0, DAFMI22003R02 FS+72d, D03PA09901C0 |  |  |  |  | 22d | 0d |  | CEILING GRID FOR GYPSUM [2439.87 h]; CEILING GRID FOR GYPSUM [208.75 m2]; Cost |  |  | D03PA09501C0 | DT | C | 03 | PA | CE | 095 | 01 | BILL 5 | B05 | S2 | 01 | R00 | ACF06 | 095 |  |  |  |  |  |  |  |  |  |  | 323 | 952 |  |  |  |  |  | R3 |
| D03PA26015C0 |  | DT-03 ; Final Fix, Termination & Gladding of Cables (Public Area) | 48d | 2012-04-28 | 2012-06-23 | D03PA26005C0 |  |  |  |  | 106d | 84d |  | ELECTRICAL [368.4 h]; Cost |  |  | D03PA26015C0 | DT | C | 03 | PA | ME | 260 | 15 | BILL 5 | B05 | S2 | FF | R00 | ACF07 | 260 |  |  |  | FF | MEP |  |  |  |  |  |  |  |  |  |  |  |  |  |
| D03PA09601C0 |  | DT-03 ; Flooring (Rubber & etc) (Public Area) | 48d | 2012-06-09 | 2012-08-04 | D03PA09901C0, D03PA09501C0, D03PA05501C0 FF |  |  |  |  | 57d | 0d |  | RUBBER FLOOR [168 h]; RUBBER FLOOR [422 m2]; Cost |  |  | D03PA09601C0 | DT | C | 03 | PA | FF | 096 | 01 | BILL 5 | B05 | S2 | 03 | R00 | ACF06 | RF |  |  |  |  |  |  |  |  |  |  | 326 | 955 |  |  |  |  |  | R3 |
| D03PA09602C0 |  | DT-03 ; Flooring (Stone) (Public Area) | 48d | 2012-06-09 | 2012-08-04 | D03PA09901C0, DAFMI22003R02 FS+72d, D03PA09501C0 |  |  |  |  | 57d | 0d |  | STONE FLOOR [1425 m2]; STONE FLOOR [1284 h]; Cost |  |  | D03PA09601C0 | DT | C | 03 | PA | FF | 096 | 01 | BILL 5 | B05 | S2 | 09 | R00 | ACF06 | ST |  |  |  |  |  |  |  |  |  |  | 326 | 955 |  |  |  |  |  | R3 |
| D03PA09905C0 |  | DT-03 ; Ceiling Prime & 1st coat (Public Area) | 36d | 2012-06-09 | 2012-07-21 | D03PA09501C0 |  |  |  |  | 94d | 0d |  | ASSORTED CEILING FINISH [89 h]; Cost |  |  | D03PA09905C0 | DT | C | 03 | PA | PA | 099 | 05 | BILL 5 | B05 | S2 | 01 | R00 | ACF06 | 099 |  |  |  |  |  |  |  |  |  |  | 330 | 958 |  |  |  |  |  |  |
| D03PA21115C0 |  | DT-03 ; 2nd Fix, Inst of Sprinkler droppers (Public Area) | 36d | 2012-06-09 | 2012-07-21 | D03PA09501C0 |  |  |  |  | 34d | 0d |  | MECHANICAL [2067.6 h]; Cost |  |  | D03PA21115C0 | DT | C | 03 | PA | ME | 211 | 15 | BILL 5 | B05 | S2 | 2F | R00 | ACF07 | 211 |  |  |  | 2n | MEP |  |  |  |  |  |  |  |  |  |  |  |  |  |
| D03PA23021C0 |  | DT-03 ; 2nd Fix, Inst of Flexible Duct & Plenum boxes (Public Area) | 36d | 2012-06-09 | 2012-07-21 | D03PA09205C0, D03PA09501C0 |  |  |  |  | 22d | 0d |  | MECHANICAL [274.8 h]; Cost |  |  | D03PA23021C0 | DT | C | 03 | PA | ME | 230 | 21 | BILL 5 | B05 | S2 | 2F | R00 | ACF07 | 230 |  |  |  | 2n | MEP |  |  |  |  |  |  |  |  |  |  |  |  |  |
| D03PA26017C0 |  | DT-03 ; Final Fix, Inst of Ceiling rose (Public Area) | 40d | 2012-06-09 | 2012-07-25 | D03PA09501C0 |  |  |  |  | 57d | 0d |  | ELECTRICAL [67.2 h]; Cost |  |  | D03PA26017C0 | DT | C | 03 | PA | ME | 260 | 17 | BILL 5 | B05 | S2 | FF | R00 | ACF07 | 260 |  |  |  | FF | MEP |  |  |  |  |  |  |  |  |  |  |  |  |  |
| D03PA27002C0 |  | DT-03 ; 2nd Fix, Wiring Droppers (Public Area) | 36d | 2012-06-09 | 2012-07-21 | D03PA09501C0 |  |  |  |  | 28d | 0d |  | ELECTRICAL [436.8 h]; Cost |  |  | D03PA27002C0 | DT | C | 03 | PA | ME | 270 | 02 | BILL 5 | B05 | S2 | 2F | R00 | ACF07 | 270 |  |  |  | 2n | MEP |  |  |  |  |  |  |  |  |  |  |  |  |  |
| D03PA27020C0 |  | DT-03 ; 2nd Fix, Inst of ELV Equipment (Panels) (Public Area) | 42d | 2012-06-09 | 2012-07-28 | D03PA09205C0, D03PA09501C0 |  |  |  |  | 34d | 0d |  | ELECTRICAL [1723.2 h]; Cost |  |  | D03PA27020C0 | DT | C | 03 | PA | ME | 270 | 20 | BILL 5 | B05 | S2 | 2F | R00 | ACF04 | 270 |  |  |  | 2n | MEP |  |  |  |  |  |  |  |  |  |  |  | E |  |
| D03PA40303C0 |  | DT-03 ; Final Fix, Pneumatic Station (Public Area) | 72d | 2012-06-09 | 2012-09-03 | D03PA09501C0 |  |  |  |  | 46d | 24d |  | MECHANICAL [5653.2 h]; Cost |  |  | C03E140303C0 | DT | C | 03 | PA | ME | 403 | 03 | BILL 5 | B05 | S2 | FF | R00 | ACF07 | 403 |  |  |  | FF | MEP |  |  |  |  |  |  |  |  |  |  |  |  |  |
| D03PA26003C0 |  | DT-03 ; Final Fix, Inst of Light fittings (Public Area) | 54d | 2012-06-18 | 2012-08-21 | D03PA09501C0, D03PA26017C0 SS+7d |  |  |  |  | 57d | 35d |  | ELECTRICAL [6626.4 h]; Cost |  |  | D03PA26003C0 | DT | C | 03 | PA | ME | 260 | 03 | BILL 5 | B05 | S2 | FF | R00 | ACF07 | 260 |  |  |  | FF | MEP |  |  |  |  |  |  |  |  |  |  |  |  |  |
| D03AR09678C1 |  | DT-03, Carpet Tile Finish (MD LOUNGE, ST LNG) | 0d | 2012-07-22 | 2012-07-22 | D03PA09903C0 SS |  |  |  |  | 110.88d | 100.6d |  | Cost |  |  |  | DT | C | 03 | AR | FF | 096 |  |  | B05 |  |  | R00 | ACF06 | CPT |  |  |  |  | CPT |  |  |  |  |  |  |  |  |  |  |  |  |  |
| D03PA09903C0 |  | DT-03 ; Wall Final Paint (Public Area) | 36d | 2012-07-22 | 2012-09-03 | D03PA09901C0, D03PA09905C0 |  |  |  |  | 94d | 0d |  | WALL PAINT [41 h]; WALL PAINT [49 m2]; Cost |  |  | D03PA09903C0 | DT | C | 03 | PA | PA | 099 | 03 | BILL 5 | B05 | S2 | 02 | R00 | ACF06 | 099 |  |  |  |  |  |  |  |  |  |  | 329 | 957 |  |  |  |  |  |  |
| D03PA21113C0 |  | DT-03 ; Final Fix, Inst of Sprinklers head/ Extinguisher (Public Area) | 48d | 2012-07-22 | 2012-09-17 | D03PA09501C0, D03PA21115C0, DAFGN05501R02 FF |  |  |  |  | 34d | 12d |  | MECHANICAL [403.2 h]; Cost |  |  | D03PA21113C0 | DT | C | 03 | PA | ME | 211 | 13 | BILL 5 | B05 | S2 | FF | R00 | ACF07 | 211 |  |  |  | FF | MEP |  |  |  |  |  |  |  |  |  |  |  |  |  |
| D03PA23019C0 |  | DT-03 ; Final Fix, Inst of Grilles & Diffusers (Public Area) | 60d | 2012-07-22 | 2012-10-01 | D03PA09501C0, D03PA23021C0, DZ9GZ23060R2 FF, DV09GZ23061R2 FF, DV10GZ23061R2 FF |  |  |  |  | 22d | 0d |  | MECHANICAL [2560.8 h]; Cost |  |  | D03PA23019C0 | DT | C | 03 | PA | ME | 230 | 19 | BILL 5 | B05 | S2 | FF | R00 | ACF07 | 230 |  |  |  | FF | MEP |  |  |  |  |  |  |  |  |  |  |  |  |  |
| D03PA27030C0 |  | DT-03 ; Final Fix, Inst of ELV device (Detector/Speaker) (Public Area) | 54d | 2012-07-22 | 2012-09-24 | D03PA09501C0, D03PA27002C0 |  |  |  |  | 28d | 6d |  | ELECTRICAL [2152.8 h]; Cost |  |  | D03PA27030C0 | DT | C | 03 | PA | ME | 270 | 30 | BILL 5 | B05 | S2 | FF | R00 | ACF07 | 270 |  |  |  | FF | MEP |  |  |  |  |  |  |  |  |  |  |  |  |  |
| D03PA09701C0 |  | DT-03 ; Wall finishes (ST, WD, WC) (Public Area) | 48d | 2012-07-29 | 2012-09-24 | D03PA26011C0, D03PA27020C0, TVT0114211C0, TVT0214211C0, TVT1214211C0, TVT3114211C0, TVT3214255C0, TVT3314245C0, DAFMI22003R02 FS+170d |  |  |  |  | 34d | 0d |  | ASSORTED WALL FINISH [820 h]; ASSORTED WALL FINISH [941 m2]; Cost |  |  | D03PA09701C0 | DT | C | 03 | PA | WF | 097 | 01 | BILL 5 | B05 | S2 | 01 | R00 | ACF06 | 097 |  |  |  |  |  |  |  |  |  |  | 105 | 1002 |  |  |  |  |  |  |
| D03PA08107C0 |  | DT-03 ; Doors (Public Area) | 42d | 2012-08-05 | 2012-09-24 | D03PA08103C0, D03PA09901C0, D03PA09602C0, D03PA09601C0 |  |  |  |  | 57d | 0d |  | ASSORTED DOORS [670 h]; ASSORTED DOORS [67 no]; Cost |  |  | D03PA08107C0 | DT | C | 03 | PA | DO | 081 | 07 | BILL 5 | B05 | S2 | DR | R00 | ACF06 | 081 |  |  |  |  |  |  |  |  |  |  | 317 | 948 |  |  |  | 08 |  |  |
| D03PA08709C0 |  | DT-03 ; Ironmongery (Public Area) | 19d | 2012-09-25 | 2012-10-16 | D03PA08107C0 |  |  |  |  | 57d | 35d |  | IRONMONGERY [280 h]; IRONMONGERY [28 no]; Cost |  |  | D03PA08709C0 | DT | C | 03 | PA | DO | 087 | 09 | BILL 5 | B05 | S2 | IM | R00 | ACF06 | 087 |  |  |  |  |  |  |  |  |  |  | 322 | 951 |  |  |  | 08 |  |  |
| D03PA11001C0 |  | DT-03 ; Wall Protection (WP, CG, WG, FCG) (Public Area) | 24d | 2012-09-25 | 2012-10-22 | D03PA09701C0, D03PA09903C0 SS |  |  |  |  | 52d | 30d |  | FF&E [1152 h]; Cost |  |  | D03PA11001C0 | DT | C | 03 | PA | WF | 110 | 01 | BILL 5 | B05 | S2 | 03 | R00 | ACF08 | b |  |  |  |  |  |  |  |  |  |  | 326 | 1001 |  |  |  |  |  |  |
| D03PA11009C0 |  | DT-03 ; Signage (Public Area) | 16d | 2012-09-25 | 2012-10-13 | D03PA09701C0 |  |  |  |  | 60d | 38d |  | SIGNAGES [440 h]; SIGNAGES [439.68 no]; Cost |  |  | D03PA11009C0 | DT | C | 03 | PA | SA | 110 | 09 | BILL 5 | B05 | S2 | 09 | R00 | ACF08 | c |  |  |  |  |  |  |  |  |  |  | 322 | 951 |  |  |  | 08 |  |  |
| D03PA01006C0 |  | DT-03 ; 2nd, Ceiling Inspection by Consultants (Public Area) | 6d | 2012-10-02 | 2012-10-08 | D03PA21115C0, D03PA23009C0, D03PA23015C0, D03PA27002C0, D03PA09501C0, D03PA09501C0 FF, D03PA21113C0, D03PA23019C0, D03PA26003C0, D03PA26017C0, D03PA27030C0, D03PA40303C0, D03PA26015C0 |  |  |  |  | 22d | 0d |  | Labor General [1.2 h]; Cost |  |  | D03PA01006C0 | DT | C | 03 | PA | ME | 010 | 06 | BILL 5 | B05 | S2 | CI | R00 | ACF07 | 010 |  |  |  | 2n | MEP |  |  |  |  |  |  |  |  |  |  |  |  |  |
| D03PA09503C0 |  | DT-03 ; Ceiling closure - ACT/Gypsum (Public Area) | 12d | 2012-10-09 | 2012-10-22 | D03PA01006C0, D03PA21115C0, D03PA26005C0, D03PA27001C0, D03PA27002C0, DAFOA09505C1 FF, D03PA09701C0, D03PA23021C0, D03PA26053C0, D03PA26007C0 |  |  |  |  | 22d | 0d |  | ASSORTED CEILING FINISH [494.46 h]; CEILING GYPSUM [68.47 h]; ASSORTED CEILING FINISH [804 m2]; CEILING GYPSUM [209 m2]; Cost |  |  | D03PA09503C0 | DT | C | 03 | PA | CE | 095 | 03 | BILL 5 | B05 | S2 | 02 | R00 | ACF06 | 095 |  |  |  |  |  |  |  |  |  |  | 324 | 953 |  |  |  |  |  | R3 |
| D03PA09907C0 |  | DT-03 ; Ceiling Final paint (Public Area) | 18d | 2012-10-23 | 2012-11-14 | D03PA09601C0, D03PA09905C0, D03PA09602C0, IP2CO09900R02 FF, D03PA09503C0 |  |  |  |  | 34d | 12d |  | ASSORTED CEILING FINISH [47 h]; Cost |  |  | D03PA09907C0 | DT | C | 03 | PA | PA | 099 | 07 | BILL 5 | B05 | S2 | 02 | R00 | ACF06 | 099 |  |  |  |  |  |  |  |  |  |  | 331 | 959 |  |  |  |  |  |  |
| D03PA26019C0 |  | DT-03 ; Final Fix, Inst of Switch/Sockets (Public Area) | 18d | 2012-10-23 | 2012-11-14 | D03PA09901C0, D03PA09503C0 |  |  |  |  | 22d | 0d |  | ELECTRICAL [610.8 h]; Cost |  |  | D03PA26019C0 | DT | C | 03 | PA | ME | 260 | 19 | BILL 5 | B05 | S2 | FF | R00 | ACF07 | 260 |  |  |  | FF | MEP |  |  |  |  |  |  |  |  |  |  |  |  |  |

| ID | WBS | Activity | Type | Duration | Start | Finish | Predecessors | Complete | Remaining | Planned start | Planned finish | Total float | Free float | Constraint | Calendar | Resources | change id | CCAD BUILDING(SET) | CCAD PHASE(SET) | CCAD FLOOR(SET) | CCAD ZONE(SET) | CCAD WORK(SET) | CCAD SECTION(SET) | CCAD SERIAL No.(SET) | CCAD CBS(SET) | CCAD BILL(SET) | CCAD HANDOVER(SET) | CCAD TAG(SET) | CCAD REV(SET) | CCADACF (SET) | CCAD SSCF | RENZ % COMPLETE | Actual Cost | Phase | Area/ Department | Grids | Are | Weight & Nos | Process | Levels | CCAD CSA | N_% | P_811 | P_711 | Change Order # | NEW ACTIVITY ID | CCAD DIVISION(SET) | user_number8 | user_integer1 | user_integer2 | user_number7 |
| --- | --- | --- | --- | --- | --- | --- | --- | --- | --- | --- | --- | --- | --- | --- | --- | --- | --- | --- | --- | --- | --- | --- | --- | --- | --- | --- | --- | --- | --- | --- | --- | --- | --- | --- | --- | --- | --- | --- | --- | --- | --- | --- | --- | --- | --- | --- | --- | --- | --- | --- | --- |
|  | 10 | **Precommissioning Tesing & snagging (Lobby, Wait, Corridor, Recept)** |  |  | 2012-11-17 | 2012-12-29 |  |  |  |  |  |  |  |  |  |  |  |  |  |  |  |  |  |  |  |  |  |  |  |  |  |  |  |  |  |  |  |  |  |  |  |  |  |  |  |  |  |  |  |  |  |
| D03TS01807C0 |  | DT-03 ; MEP de-snag, FIREM sign-off |  | 12d | 2012-11-17 | 2012-11-29 | D03PA26015C0, D03PA21113C0, D03PA23019C0, D03PA26017C0, D03PA26003C0, D03PA27030C0, D03PA40303C0, D03PA26019C0 |  |  |  |  | 22d | 0d |  |  | TESTING & COMMISSIONING [1275 h]; Cost | D03TS01801C0 | DT | C | 03 | TS | SC | 018 | 01 | BILL 5 | B05 | S2 | 01 | R00 | ACF07 | 018 |  |  |  |  |  |  |  |  |  |  |  |  |  |  |  |  |  |  |  |  |
| D03TS01812C0 |  | DT-03 ; Touch-up & Clean / JV inspection /CIR /De-snag |  | 18d | 2012-12-01 | 2012-12-22 | D03PA08709C0, D03PA09601C0, D03PA09701C0, D03PA09903C0, D03PA09907C0, D03PA11001C0, D03PA11009C0, D03TS01807C0, DAFT2205509C0, D03PA05501C0, D04CO04418C0, D03PA09602C0, D03PA09503C0 |  |  |  |  | 22d | 0d |  |  | TESTING & COMMISSIONING [213 h]; Cost | D03TS01802C0 | DT | C | 03 | TS | SC | 018 | 02 | BILL 5 | B05 | S2 | 02 | R00 | ACF07 | 018 |  |  |  |  |  |  |  |  |  |  |  |  |  |  |  |  |  |  |  |  |
| D03TS01817C0 |  | DT-03 ; Consultant's final de-snag inspection |  | 7d | 2012-12-23 | 2012-12-29 | D03TS01812C0 |  |  |  |  | 26d | 14.97d |  | R00-C02, Calendar day | Labor General [1 h]; Cost | D03TS01803C0 | DT | C | 03 | TS | SC | 018 | 03 | BILL 5 | B05 | S2 | 03 | R00 | ACF07 | 018 |  |  |  |  |  |  |  |  |  |  |  |  |  |  |  |  |  |  |  |  |
|  | 04 | **Level 4** |  |  | 2010-10-22 | 2012-11-28 |  |  |  |  |  |  |  |  |  |  |  |  |  |  |  |  |  |  |  |  |  |  |  |  |  |  |  |  |  |  |  |  |  |  |  |  |  |  |  |  |  |  |  |  |  |
|  | 01 | **Structure & Envelopment** |  |  | 2010-10-22 | 2012-10-09 |  |  |  |  |  |  |  |  |  |  |  |  |  |  |  |  |  |  |  |  |  |  |  |  |  |  |  |  |  |  |  |  |  |  |  |  |  |  |  |  |  |  |  |  |  |
| D04SA03301C0 |  | DT-04 ; Corewall concrete (Zone SA) |  | 4d | 2010-10-22 A | 2010-10-25 A | D03SA03301C0 | 100% |  | 2010-09-12 | 2010-09-16 |  |  |  |  | CONCRETE [8080 h]; CONCRETE [203 m3]; Cost | D04SA03301C0 | DT | C | 04 | SA | CT | 033 | 01 | BILL 5 | B05 | S2 | 04 | R00 | ACF03 | 033 | 100 |  |  |  |  |  |  |  |  |  |  |  |  |  |  |  |  |  |  |  |
| D04SB03303C0 |  | DT-04 ; Corewall concrete (Zone SB) |  | 4d | 2010-10-27 A | 2010-10-31 A | D03SB03303C0 | 100% |  | 2010-09-12 | 2010-09-16 |  |  |  |  | CONCRETE [8112 h]; CONCRETE [204 m3]; Cost | D04SB03303C0 | DT | C | 04 | SB | CT | 033 | 03 | BILL 5 | B05 | S2 | 04 | R00 | ACF03 | 033 | 100 |  |  |  |  |  |  |  |  |  |  |  |  |  |  |  |  |  |  |  |
| D04S105101C0 |  | DT-04 ; Erection of Structural Steel of 4th Floor (Zone S1) |  | 5d | 2010-11-14 A | 2010-12-15 A | D03S105103C0 | 100% |  | 2010-11-20 | 2010-11-25 |  |  |  |  | STRUCTURAL STEEL [13518 h]; STRUCTURAL STEEL [529 T(Fe)]; Cost | D04S105101C0 | DT | C | 04 | S1 | ST | 051 | 01 | BILL 5 | B05 | S2 | 01 | R00 | ACF03 | 051 | 100 | 3968618 | Z2 | DT | P03 | O | A3 | EREC | 1FLR | ST |  |  |  |  |  |  |  |  |  |  |
| D04S105103C0 |  | DT-04 ; Alignment & welding of 4th Floor (Zone S1) |  | 3d | 2010-11-20 A | 2011-02-20 A | D04S105101C0 SS+4d | 100% |  | 2011-01-05 | 2011-01-08 |  |  |  |  | STRUCTURAL STEEL [1058 h]; Cost | D04S105103C0 | DT | C | 04 | S1 | ST | 051 | 03 | BILL 5 | B05 | S2 | 02 | R00 | ACF03 | 051 | 100 | 440957.5 | Z2 | DT | P03 | O | A3 | EREC | 1FLR | ST |  |  |  |  |  |  |  |  |  |  |
| D04S205101C0 |  | DT-04 ; Erection of Structural Steel of 4th Floor (Zone S2) |  | 8d | 2010-11-26 A | 2011-02-24 A | D03S205103C0 | 100% |  | 2010-12-19 | 2010-12-28 |  |  |  |  | STRUCTURAL STEEL [10468 h]; STRUCTURAL STEEL [410 T(Fe)]; Cost | D04S205101C0 | DT | C | 04 | S2 | ST | 051 | 01 | BILL 5 | B05 | S2 | 01 | R00 | ACF03 | 051 | 100 | 4928536 | Z2 | DT | P03 | O | A3 | EREC | 1FLR | ST |  |  |  |  |  |  |  |  |  |  |
| D04S205103C0 |  | DT-04 ; Alignment & welding of 4th Floor (Zone S2) |  | 4d | 2010-12-05 A | 2011-03-02 A | D04S205101C0 | 100% |  | 2011-02-09 | 2011-02-14 |  |  |  |  | STRUCTURAL STEEL [1314 h]; Cost | D04S205103C0 | DT | C | 04 | S2 | ST | 051 | 03 | BILL 5 | B05 | S2 | 02 | R00 | ACF03 | 051 | 100 |  | Z2 | DT | P03 | O | A3 | EREC | 1FLR | ST |  |  |  |  |  |  |  |  |  |  |
| D04S305101C0 |  | DT-04 ; Erection of Structural Steel of 4th Floor (Zone S3) |  | 9.25d | 2010-12-11 A | 2011-02-21 A | D03S305103C0 | 100% |  | 2011-01-20 | 2011-01-31 |  |  |  |  | STRUCTURAL STEEL [12642 h]; STRUCTURAL STEEL [494 T(Fe)]; Cost | D04S305101C0 | DT | C | 04 | S3 | ST | 051 | 01 | BILL 5 | B05 | S2 | 01 | R00 | ACF03 | 051 | 100 | 5429985.68 | Z2 | DT | P03 | O | A3 | EREC | 1FLR | ST |  |  |  |  |  |  |  |  |  |  |
| D04S305103C0 |  | DT-04 ; Alignment & welding of 4th Floor (Zone S3) |  | 5d | 2010-12-22 A | 2011-03-04 A | D04S305101C0 | 100% |  | 2011-03-01 | 2011-03-07 |  |  |  |  | STRUCTURAL STEEL [1448 h]; Cost | D04S305103C0 | DT | C | 04 | S3 | ST | 051 | 03 | BILL 5 | B05 | S2 | 02 | R00 | ACF03 | 051 | 100 |  | Z2 | DT | P03 | O | A3 | EREC | 1FLR | ST |  |  |  |  |  |  |  |  |  |  |
| D04S105305C0 |  | DT-04 ; Metal Decking 4th FLR (Zone S1) |  | 15d | 2011-01-05 A | 2011-03-07 A | D04S105103C0, DR5S105101C0, I05S105101C0, S05S105101C0 | 100% |  | 2011-01-12 | 2011-01-30 |  |  |  |  | METAL DECKING [2501 h]; METAL DECKING [3166 m2]; Cost | D04S105305C0 | DT | C | 04 | S1 | ST | 053 | 05 | BILL 5 | B05 | S2 | 03 | R00 | ACF03 | 053 | 100 |  | Z2 | DT | P03 | O | A3 | MDEC | 1FLR | ST |  |  |  |  |  |  |  |  |  |  |
| D04S205305C0 |  | DT-04 ; Metal Decking 4th FLR (Zone S2) |  | 20d | 2011-01-15 A | 2011-03-07 A | D04S205103C0, D04S305305C0, DR5S205101C0, I05S205101C0, S05S205101C0 | 100% |  | 2011-02-22 | 2011-03-17 |  |  |  |  | METAL DECKING [3106 h]; METAL DECKING [3932 m2]; Cost | D04S205305C0 | DT | C | 04 | S2 | ST | 053 | 05 | BILL 5 | B05 | S2 | 03 | R00 | ACF03 | 053 | 100 |  | Z2 | DT | P03 | O | A3 | MDEC | 1FLR | ST |  |  |  |  |  |  |  |  |  |  |
| D04S305305C0 |  | DT-04 ; Metal Decking 4th FLR (Zone S3) |  | 21d | 2011-01-20 A | 2011-04-11 A | D04S305103C0, DR5S305101C0, S05S305101C0 | 100% |  | 2011-01-29 | 2011-02-22 |  |  |  |  | METAL DECKING [3422 h]; METAL DECKING [4332 m2]; Cost | D04S305305C0 | DT | C | 04 | S3 | ST | 053 | 05 | BILL 5 | B05 | S2 | 03 | R00 | ACF03 | 053 | 100 |  | Z2 | DT | P03 | O | A3 | MDEC | 1FLR | ST |  |  |  |  |  |  |  |  |  |  |
| D04S103399C0 |  | DT-04 ; Concrete on Metal Decking 4th FLR (Zone S1) |  | 10d | 2011-01-28 A | 2011-04-05 A | D04S105305C0 | 100% |  | 2011-01-30 | 2011-02-10 |  |  |  |  | CONCRETE [14320 h]; CONCRETE [360 m3]; Cost | D04S105335C0 | DT | C | 04 | S1 | CT | 033 | 99 | BILL 5 | B05 | S2 | 08 | R00 | ACF03 | 033 | 100 |  | Z2 | DT | P03 | O | A3 | MDEC | 1FLR |  |  |  |  |  |  |  |  |  |  |  |
| D04S203399C0 |  | DT-04 ; Concrete on Metal Decking 4th FLR (Zone S2) |  | 10d | 2011-01-28 A | 2011-04-07 A | D04S205305C0 | 100% |  | 2011-03-17 | 2011-03-29 |  |  |  |  | CONCRETE [21384 h]; CONCRETE [538 m3]; Cost | D04S205335C0 | DT | C | 04 | S2 | CT | 033 | 99 | BILL 5 | B05 | S2 | 08 | R00 | ACF03 | 033 | 100 |  | Z2 | DT | P03 | O | A3 | MDEC | 1FLR |  |  |  |  |  |  |  |  |  |  |  |
| D04S303399C0 |  | DT-04 ; Concrete on Metal Decking 4th FLR (Zone S3) |  | 10d | 2011-02-08 A | 2011-05-15 A | D04S305305C0 | 100% |  | 2011-02-27 | 2011-03-10 |  |  |  |  | CONCRETE [23496 h]; CONCRETE [591 m3]; Cost | D04S305335C0 | DT | C | 04 | S3 | CT | 033 | 99 | BILL 5 | B05 | S2 | 08 | R00 | ACF03 | 033 | 100 |  | Z2 | DT | P03 | O | A3 | MDEC | 1FLR |  |  |  |  |  |  |  |  |  |  |  |
| D04S107807C0 |  | DT-04 ; Cementitious Fire Proofing works 4th FLR (Zone S1) |  | 12d | 2011-03-14 A | 2011-07-31 A | DR5S103399C0 | 100% |  | 2011-03-14 | 2011-03-28 |  |  |  |  | CEMENTITIOUS FIREPROOFING [2190 h]; CEMENTITIOUS FIREPROOFING [4379 m2]; Cost | D04S107807C0 | DT | C | 04 | S1 | ST | 078 | 07 | BILL 5 | B05 | S2 | 04 | R00 | ACF03 | 078 | 95 |  | Z2 | DT | P03 | O | A3 | FIRE | 1FLR | ST |  |  |  |  |  |  |  |  |  |  |
| D04S307807C0 |  | DT-04 ; Cementitious Fire Proofing works 4th FLR (Zone S3) |  | 14d | 2011-03-14 A | 2011-07-19 A | DR5S303399C0 | 100% |  | 2011-04-09 | 2011-04-25 |  |  |  |  | CEMENTITIOUS FIREPROOFING [2996 h]; CEMENTITIOUS FIREPROOFING [5992 m2]; Cost | D04S307807C0 | DT | C | 04 | S3 | ST | 078 | 07 | BILL 5 | B05 | S2 | 04 | R00 | ACF03 | 078 | 80 |  | Z2 | DT | P03 | O | A3 | FIRE | 1FLR | ST |  |  |  |  |  |  |  |  |  |  |
| D04S207807C0 |  | DT-04 ; Cementitious Fire Proofing works 4th FLR (Zone S2) |  | 14d | 2011-03-27 A | 2011-07-19 A | DR5S203399C0 | 100% |  | 2011-03-26 | 2011-04-11 |  |  |  |  | CEMENTITIOUS FIREPROOFING [2719 h]; CEMENTITIOUS FIREPROOFING [5438 m2]; Cost | D04S207807C0 | DT | C | 04 | S2 | ST | 078 | 07 | BILL 5 | B05 | S2 | 04 | R00 | ACF03 | 078 | 80 |  | Z2 | DT | P03 | O | A3 | FIRE | 1FLR | ST |  |  |  |  |  |  |  |  |  |  |
| D04GN01608C0 |  | DT-04 ; Temporary Enclosure | level of effort | 152.6d | 2011-05-17 A | 2012-05-15 | D04M109203C0 SS, D04M209203C0 SS, D04TR09203C0 SS |  | 189d | 2011-07-23 | 2012-01-25 | 276d | 0d |  |  | Labor General [0.6 h]; Cost |  | DT | C | 04 | GEN | FA | GEN |  |  | B05 |  | TE | R00 | ACF05 | 010 |  |  |  |  |  |  |  |  |  | FA | 4 | 24.9 | 4.33 |  |  |  |  |  |  |  |
| D04CO04001C0 |  | DT-P1 ; Blockworks (Common Zone) |  | 24d | 2011-06-02 A | 2011-10-01 | D04S107807C0, D04S207807C0, D04S307807C0 | 100% | 0d | 2011-06-02 | 2011-07-02 | 82.2d | 0d |  |  | Cost | DP1CO04001C0 | DT | C | 04 | CO | BL | 040 | 01 | BILL 5 | B05 | S2 | BL | R00 | ACF06 | 040 |  |  |  |  |  |  |  |  |  |  |  | 80 | 20 | 73 | 73 | 04 |  |  |  |  |
| D04CO04003C0 |  | DT-P1 ; Plaster to Blockwork (Common Zone) |  | 24d | 2011-07-10 A | 2011-10-05 | D04CO04001C0 | 80% | 4.8d | 2011-07-30 | 2011-08-27 | 82.2d | 58.2d |  |  | Labor General [1 h]; Cost | DP1CO04003C0 | DT | C | 04 | CO | BL | 040 | 03 | BILL 5 | B05 | S2 | BL | R00 | ACF06 | 040 |  |  |  |  |  |  |  |  |  |  |  | 80 | 20 |  |  |  |  |  |  |  |
| D04CO04405C0 |  | DT-04 ; Louvers Bracket (Common Zone) |  | 90d | 2011-08-10 A | 2011-12-19 | D04CO04415C0 | 50% | 45d | 2011-10-04 | 2012-01-23 | 203d | 0d |  |  | FACADE SAND LOUVERS [1449.3 h]; Cost | I05CO04405C0 | DT | C | 04 | CO | FA | 044 | 05 | BILL 5 | B05 | S2 | FSL | R00 | ACF05 | 044 |  |  |  |  |  |  |  |  |  | FA |  | 50 | 0 |  |  |  | 0 | 0 | 0 | 0 |
| D04CO04413C0 |  | DT-04 ; M1 Bracket (Common Zone) |  | 60d | 2011-08-10 A | 2011-10-03 | D04S107807C0, D04S207807C0, D04S307807C0 | 95% | 3d | 2011-07-31 | 2011-10-10 | 203d | 0d |  |  | FACADE METAL PANEL 1 [2211.4 h]; Cost | D04CO04413C0 | DT | C | 04 | CO | FA | 044 | 13 | BILL 5 | B05 | S2 | FM1 | R00 | ACF05 | 044 |  |  |  |  |  |  |  |  |  | FA |  | 50 | 0 |  |  |  |  |  |  |  |
| D04CO04417C1 |  | DT-04 ; Louvers transom & mullion (Common Zone) |  | 90d | 2011-08-10 A | 2012-01-31 | D04CO04405C0 | 60% | 36d | 2011-10-18 | 2012-02-07 | 203d | 0d |  |  | FACADE SAND LOUVERS [5795.9 h]; Cost | I05CO04417C0 | DT | C | 04 | CO | FA | 044 | 17 | BILL 5 | B05 | S2 | FSL | R00 | ACF05 | 044 |  |  |  |  |  |  |  |  |  | FA |  | 60 | 0 |  |  |  | 0 | 0 | 0 | 0 |
| D04CO04425C0 |  | DT-04 ; PSG Steel grill transom & mullion (Common Zone) |  | 90d | 2011-08-10 A | 2012-01-31 | D04CO04405C0 | 60% | 36d | 2011-10-18 | 2012-02-07 | 232.62d | 24d |  |  | FACADE STEEL GRILL [4996.9 h]; Cost | I05CO04415C0 | DT | C | 04 | CO | FA | 044 | 15 | BILL 8 | B05 | S2 | PSG | R00 | ACF05 | 044 |  |  |  |  |  |  |  |  |  | FA |  | 60 | 0 |  |  |  |  |  |  |  |
| D04CO04443C0 |  | DT-04 ; M2 Bracket (Canyon) |  | 90d | 2011-08-10 A | 2011-11-24 | D04S107807C0, D04S207807C0, D04S307807C0 | 50% | 45d | 2011-12-21 | 2012-04-05 | 185d | 0d |  |  | FACADE METAL PANEL 2 [6603.2 h]; Cost | DR5CO04443C0 | DT | C | 04 | CO | FA | 044 | 43 | BILL 5 | B05 | S2 | FM2 | R00 | ACF05 | 044 |  |  |  |  |  |  |  |  |  | FA |  | 50 | 0 |  |  |  | 0 | 0 | 0 | 0 |
| D04CO04445C0 |  | DT-04 ; M2 Transom & Mullion (Canyon) |  | 72d | 2011-08-10 A | 2011-11-24 | D04CO04443C0 SS+14d, D04CO04443C0 FF | 40% | 43.2d | 2011-12-28 | 2012-03-22 | 185d | 0d |  |  | FACADE METAL PANEL 2 [26411.4 h]; Cost | DR5CO04445C0 | DT | C | 04 | CO | FA | 044 | 45 | BILL 5 | B05 | S2 | FM2 | R00 | ACF05 | 044 |  |  |  |  |  |  |  |  |  | FA |  | 20 | 0 |  |  |  | 0 | 0 | 0 | 0 |
| D04CO04415C0 |  | DT-04 ; M1 External Partition (Common Zone) |  | 36.75d | 2011-09-05 A | 2011-10-22 | D04CO04413C0 SS+15d, D04GN01608C0 FF, D04CO04413C0 FF | 50% | 18.38d | 2011-09-01 | 2011-10-13 | 203d | 0d |  |  | PARTITIONS [5961.37 m]; PARTITIONS [29688.7 h]; Cost | D04CO04415C0 | DT | C | 04 | CO | FA | 044 | 15 | BILL 5 | B05 | S2 | FM1 | R00 | ACF05 | 044 |  |  |  |  |  |  |  |  |  | FA |  |  |  |  |  |  |  |  |  |  |
| D04CO04417C0 |  | DT-04 ; M1 Metal Panel (Common Zone) |  | 35.62d | 2011-10-01 | 2011-11-14 | D03CO04417C0 SS, D04CO04415C0 SS+15d |  |  |  |  | 248.38d | 86.38d |  |  | FACADE CURTAIN WALL 5 [689.7 h]; FACADE METAL PANEL 1 [9152.4 h]; FACADE METAL PANEL MWP1 [1231.1 h]; FACADE SAND LOUVERS [1966.9 h]; FACADE CURTAIN WALL 5 [252 m2]; FACADE METAL PANEL 1 [3345 m2]; FACADE METAL PANEL MWP1 [450 m2]; FACADE SAND LOUVERS [719 m2]; FACADE TOTAL QUANTITY m2 [4766 m2]; Cost | D04CO04417C0 | DT | C | 04 | CO | FA | 044 | 17 | BILL 5 | B05 | S2 | FM1 | R00 | ACF05 | 044 |  |  |  |  |  |  |  |  |  | FA |  |  |  |  |  |  |  |  |  |  |
| D04CO04447C0 |  | DT-04 ; M2 Metal Panel (Canyon) |  | 54d | 2011-11-27 | 2012-01-30 | D04CO04445C0, D04GN01608C0 FF |  |  |  |  | 185d | 23d |  |  | FACADE METAL PANEL 2 [11005.2 h]; Cost | DR5CO04447C0 | DT | C | 04 | CO | FA | 044 | 47 | BILL 5 | B05 | S2 | FM2 | R00 | ACF05 | 044 |  |  |  |  |  |  |  |  |  | FA |  |  |  |  |  |  |  |  |  |  |
| D04CO04423C0 |  | DT-04 ; SK-1 Canyon Skylight Bracket & transom installation |  | 24d | 2012-01-02 | 2012-01-29 | DR5S103399C0, DR5S203399C0, CR5S203335C0, CR5S103335C0, D04CO04423C03 |  |  |  |  | 162d | 0d |  |  | Labor General [0.6 h]; Cost | DR5CO04423C0 | DT | C | 04 | CO | FA | 044 | 23 | BILL 5 | B05 | S2 | FSY | R00 | ACF05 | 044 |  |  |  |  |  |  |  |  |  | FA |  |  |  |  |  |  |  |  |  |  |
| D04CO04423C03 |  | DT-04 ; SK-1 Canyon Skylight Bracket & transom installation | milestone | 0d | 2012-01-02 | 2012-01-02 | MGNMI00101M0 |  |  |  |  | 162d | 0d | start on or after 2012-01-02 |  |  | DR5CO04423C0 | DT | C | 04 | CO | FA | 044 | 23 | BILL 5 | B05 | S2 | FSY | R00 | ACF05 | 044 |  |  |  |  |  |  |  |  |  |  |  |  |  |  |  |  |  |  |  |  |
| D04CO04455C0 |  | DT-04 ; M1 Inner Side of External Partition (Common Zone) |  | 54d | 2012-01-24 | 2012-03-27 | D04CO04415C0, D04M109205C0 SS, D04M209205C0 SS |  |  |  |  | 154.38d | 0d |  |  | FACADE METAL PANEL 1 [17472.6 h]; Cost | DP3CO04415C0 | DT | C | 04 | CO | FA | 044 | 15 | BILL 5 | B05 | S1 | FM1 | R00 | ACF05 | 044 |  |  |  |  |  |  |  |  |  | FA |  |  |  |  |  |  |  |  |  |  |
| D04CO04429C0 |  | DT-04 ; SK-1 Canyon Skylight Glass installation |  | 24d | 2012-01-30 | 2012-02-28 | D04CO04423C0 |  |  |  |  | 162d | 0d |  |  | Labor General [0.6 h]; Cost | DR5CO04405C0 | DT | C | 04 | CO | FA | 044 | 05 | BILL 5 | B05 | S2 | FSY | R00 | ACF05 | 044 |  |  |  |  |  |  |  |  |  | FA |  |  |  |  |  |  |  |  |  |  |
| D04CO04413C1 |  | DT-04 ; Louvers installation (Common Zone) |  | 48d | 2012-01-31 | 2012-03-28 | D04CO04417C1 |  |  |  |  | 203d | 0d |  |  | FACADE STEEL GRILL [2415.1 h]; Cost | I05CO04413C0 | DT | C | 04 | CO | FA | 044 | 13 | BILL 5 | B05 | S2 | FSL | R00 | ACF05 | 044 |  |  |  |  |  |  |  |  |  | FA |  |  |  |  |  |  |  |  |  |  |
| D04CO04433C0 |  | DT-04 ; C3 Bracket (Canyon) |  | 50d | 2012-02-05 | 2012-04-02 | D04S107807C0, D04S207807C0, D04S307807C0, CGLCO04403C0 SS+25d |  |  |  |  | 45d | 0d |  |  | FACADE CURTAIN WALL 3 [124.9 h]; Cost | D04CO04433C0 | DT | C | 04 | CO | FA | 044 | 33 | BILL 5 | B05 | S2 | FC3 | R00 | ACF05 | 044 |  |  |  |  |  |  |  |  |  | FA |  |  |  |  |  |  |  |  |  |  |
| D04CO04435C0 |  | DT-04 ; C3 Transom & Mullion (Canyon) |  | 60d | 2012-02-07 | 2012-04-16 | D04CO04433C0 SS+2d, D04CO04433C0 FF |  |  |  |  | 276d | 0d |  |  | FACADE CURTAIN WALL 3 [499.5 h]; Cost | D04CO04435C0 | DT | C | 04 | CO | FA | 044 | 35 | BILL 5 | B05 | S2 | FC3 | R00 | ACF05 | 044 |  |  |  |  |  |  |  |  |  | FA |  |  |  |  |  |  |  |  |  |  |
| D04CO04437C0 |  | DT-04 ; C3 Glazing (Canyon) |  | 83d | 2012-02-09 | 2012-05-15 | D04CO04435C0 SS+2d, D04GN01608C0 FF, D04CO04435C0 FF |  |  |  |  | 276d | 139.75d |  |  | FACADE CURTAIN WALL 3 [356.5 h]; FACADE CURTAIN WALL 3 [130 m2]; FACADE TOTAL QUANTITY m2 [130 m2]; Cost | D04CO04437C0 | DT | C | 04 | CO | FA | 044 | 37 | BILL 5 | B05 | S2 | FC3 | R00 | ACF05 | 044 |  |  |  |  |  |  |  |  |  | FA |  |  |  |  |  |  |  |  |  |  |
| D04CO04422C0 |  | DT-04 ; PSG Steel grill (Common Zone) |  | 42d | 2012-02-29 | 2012-04-18 | D04CO04425C0, D04CO04413C1 SS+24d |  |  |  |  | 208.62d | 0d |  |  | FACADE STEEL GRILL [2082.4 h]; Cost | I05CO04411C0 | DT | C | 04 | CO | FA | 044 | 11 | BILL 8 | B05 | S2 | PSG | R00 | ACF05 | 044 |  |  |  |  |  |  |  |  |  | FA |  |  |  |  |  |  |  |  |  |  |
| D04CO04431C0 |  | DT-04 ; PSG Steel grill Bracket (Common Zone) |  | 36d | 2012-02-29 | 2012-04-11 | D04CO04422C0 SS |  |  |  |  | 238.62d | 229.6d |  |  | FACADE STEEL GRILL [1249.3 h]; Cost | I05CO04407C0 | DT | C | 04 | CO | FA | 044 | 07 | BILL 8 | B05 | S2 | PSG | R00 | ACF05 | 044 |  |  |  |  |  |  |  |  |  | FA |  |  |  |  |  |  |  |  |  |  |
| D04CO04418C0 |  | DT-04 ; CY Courtyard System Installation (Common Zone) |  | 54d | 2012-08-06 | 2012-10-09 | D03CO04418C0 |  |  |  |  | 63d | 41d |  |  | Labor General [9288.7 h]; Cost | D02CO04417C0 | DT | C | 04 | CO | FA | 044 | 17 | BILL 5 | B05 | S2 | CY | R00 | ACF05 | 044 |  |  |  |  |  |  |  |  |  | FA |  |  |  |  |  |  |  |  |  |  |

| ID | WBS | Activity | Duration | Start | Finish | Predecessors | Complete | Remaining | Planned start | Planned finish | Total float | Free float | Resources | Cost | Actual cost | change id | RENZ % COMPLETE | CCAD BUILDING(SET) | CCAD PHASE(SET) | CCAD FLOOR(SET) | CCAD ZONE(SET) | CCAD WORK(SET) | CCAD SECTION(SET) | CCAD SERIAL No.(SET) | CCAD SUB ZONE MEP(SET) | CCAD CBS(SET) | CCAD BILL(SET) | CCAD HANDOVER(SET) | CCAD TAG(SET) | CCAD REV(SET) | CCADACF (SET) | CCAD CSA | CCAD SSCF | Act Selector % | user_number8 | user_integer1 | user_integer2 | user_number7 | Claimed This Month | Change Order # | NEW ACTIVITY ID | P_811 | P_711 | July2011 Target% Complete | PERCENT COMPLETE | CCAD MEQ | CCAD DIVISION(SET) |
| --- | --- | --- | --- | --- | --- | --- | --- | --- | --- | --- | --- | --- | --- | --- | --- | --- | --- | --- | --- | --- | --- | --- | --- | --- | --- | --- | --- | --- | --- | --- | --- | --- | --- | --- | --- | --- | --- | --- | --- | --- | --- | --- | --- | --- | --- | --- | --- |
|  | 02 | **Mech-1** |  | 2011-04-11 | 2012-11-28 |  |  |  |  |  |  |  |  |  |  |  |  |  |  |  |  |  |  |  |  |  |  |  |  |  |  |  |  |  |  |  |  |  |  |  |  |  |  |  |  |  |  |
| D04M123001C0 |  | DT-04 ; 1st Fix, Inst. of Supports for MEP (Mech RM) | 36d | 2011-04-11 A | 2011-05-30 A | D04S107807C0 SS, D04S207807C0 SS | 100% |  | 2011-03-26 | 2011-05-07 |  |  | MECHANICAL [1338 h]; Cost [75432.9 AED] | 75,432.94 | 75,432.94 | D04ME23001C0 | 100 | DT | C | 04 | M1 | ME | 230 | 01 | 1S | BILL 5 | B05 | S2 | 1F | R00 | ACF04 | MEP | 230 | M1F |  |  |  |  |  |  |  |  |  |  |  |  |  |
| D04M109201C0 |  | DT-04 ; Metal Studs (Mech RM) | 42d | 2011-05-10 A | 2011-11-09 | D04ER09201C0 SS+6d, D04M123001C0 | 26% | 31.08d | 2011-07-16 | 2011-09-05 | 25d | 0d | PARTITIONS [5139 h]; PARTITIONS - Metal Studs [713 m]; Cost |  |  | D04ME09201C0 | 20 | DT | C | 04 | M1 | PT | 092 | 01 |  | BILL 5 | B05 | S2 | 1F | R00 | ACF06 | GP | 092 | PMS | 0 | 0 | 0 | 0 | 32881.49 |  |  |  |  |  |  |  |  |
| D04M109203C0 |  | DT-04 ; Partitions 1st face (Mech RM) | 60d | 2011-05-18 A | 2011-12-04 | D04M109201C0 SS+12d | 16% | 50.4d | 2011-07-30 | 2011-10-10 | 180.6d | 35.6d | PARTITIONS [713 m]; PARTITIONS [4013 h]; Cost |  |  | D04ME09203C0 | 2 | DT | C | 04 | M1 | PT | 092 | 03 |  | BILL 5 | B05 | S2 | 2F | R00 | ACF06 | GP | 092 | P1F | 0 | 0 | 0 | 0 | 36821.45 | 314 | 1463 | 15 | 12 |  |  |  |  |
| D04M121111C0 |  | DT-04 ; 1st Fix, Inst of Sprinkler main pipe (Mech RM) | 90d | 2011-07-10 A | 2011-11-24 | D04M123001C0 | 50% | 45d | 2011-08-02 | 2011-11-20 | 88d | 0d | MECHANICAL [981.6 h]; Cost [53543.7 AED] | 53,543.69 | 26,771.85 | D04ME21111C0 |  | DT | C | 04 | M1 | ME | 211 | 11 | 1S | BILL 5 | B05 | S2 | 1F | R00 | ACF04 | MEP | 211 | M1F |  |  |  |  |  |  |  | 50 | 40 | 20 |  |  |  |
| D04M122011C0 |  | DT-04 ; 1st Fix, Inst of Drainage pipe (Mech RM) | 150d | 2011-07-10 A | 2011-11-23 | D04M123001C0, D04M126001C0 SS+14d | 80% | 30d | 2011-07-17 | 2012-01-16 | 145d | 0d | PLUMBING [1173.6 h]; Cost [61888.2 AED] | 61,888.15 | 49,510.52 | D04ME22011C0 |  | DT | C | 04 | M1 | ME | 220 | 11 | 1S | BILL 5 | B05 | S2 | 1F | R00 | ACF04 | MEP | 220 | M1F |  |  |  |  |  |  |  | 80 | 70 | 20 |  |  |  |
| D04M123013C0 |  | DT-04 ; 2nd Fix, Inst of Equipment (AHU) (Mech RM) | 120d | 2011-07-10 A | 2012-01-02 | D04S107807C0, D04S207807C0, D04S307807C0, D04M121111C0 | 75% | 30d | 2011-07-06 | 2011-11-29 | 88d | 0d | MECHANICAL [52650 h]; Cost [11980949 AED] | 11,980,948.98 | 8,985,711.73 | D04ME23013C0 |  | DT | C | 04 | M1 | ME | 230 | 13 | 2n | BILL 5 | B05 | S2 | 2F | R00 | ACF04 | MEP | 230 |  | 0 | 0 | 0 | 0 | 6948948.83 |  |  | 75 | 50 | 75 | 75 | H |  |
| D04M126009C0 |  | DT-04 ; 2nd Fix, Inst of Equipment (DB, TR, SG) (Mech RM) | 150d | 2011-07-10 A | 2011-11-03 | D04S107807C0, D04S207807C0, D04S307807C0 | 80% | 30d | 2011-10-01 | 2012-03-31 | 235d | 98d | ELECTRICAL [10124.4 h]; Cost [2303986 AED] | 2,303,985.68 | 1,843,188.54 | D04ME26009C0 |  | DT | C | 04 | M1 | ME | 260 | 09 | 2n | BILL 5 | B05 | S2 | 2F | R00 | ACF04 | MEP | 260 |  |  |  |  |  | 1547606.46 |  |  | 80 | 50 | 75 |  | E |  |
| D04M121119C0 |  | DT-04 ; 1st Fix, Inst of Sprinkler branch pipe (Mech RM) | 90d | 2011-08-10 A | 2012-01-19 | D04M121111C0 | 50% | 45d | 2011-10-25 | 2012-02-15 | 127d | 38d | MECHANICAL [1441.2 h]; Cost [78749.8 AED] | 78,749.79 | 39,374.9 | D04ME21119C0 |  | DT | C | 04 | M1 | ME | 211 | 19 | 1S | BILL 5 | B05 | S2 | 1F | R00 | ACF04 | MEP | 211 | M1F |  |  |  |  |  |  |  | 50 | 0 |  |  |  |  |
| D04M123019C0 |  | DT-04 ; 1st Fix, Inst of CHW pipe (Mech RM) | 78d | 2011-10-01 | 2012-01-05 | D04M121111C0 SS+10d, D04M123001C0 |  |  |  |  | 145d | 0d | MECHANICAL [6325.2 h]; Cost |  |  | D04ME23019C0 |  | DT | C | 04 | M1 | ME | 230 | 19 | 1S | BILL 5 | B05 | S2 | 1F | R00 | ACF04 | MEP | 230 | M1F |  |  |  |  |  |  |  |  |  |  |  |  |  |
| D04M126001C0 |  | DT-04 ; 1st Fix, Inst of Trunking/Conduiting (Mech RM) | 48d | 2011-10-01 | 2011-11-29 | D04M123001C0 |  |  |  |  | 145d | 0d | ELECTRICAL [824.4 h]; Cost |  |  | D04ME26001C0 |  | DT | C | 04 | M1 | ME | 260 | 01 | 1S | BILL 5 | B05 | S2 | 1F | R00 | ACF04 | MEP | 260 | M1F |  |  |  |  |  |  |  |  |  | 20 |  |  |  |
| D04M122006C0 |  | DT-04 ; 1st Fix, Inst of Water supply pipe (Mech RM) | 72d | 2011-10-17 | 2012-01-15 | D04M122011C0 SS+4d, D04M123001C0 |  |  |  |  | 145d | 0d | PLUMBING [4896 h]; Cost |  |  | D04ME22006C0 |  | DT | C | 04 | M1 | ME | 220 | 06 | 1S | BILL 5 | B05 | S2 | 1F | R00 | ACF04 | MEP | 220 | M1F |  |  |  |  |  |  |  |  |  | 24 |  |  |  |
| D04M108101C0 |  | DT-04 ; Metal Door Frames (Mech RM) | 18d | 2011-11-27 | 2011-12-18 | D04M109201C0, GNHE08101C0 FS+93d |  |  |  |  | 210d | 65d | METAL DOORS [543 h]; Cost |  |  | D04ME08101C0 |  | DT | C | 04 | M1 | DO | 081 | 01 |  | BILL 5 | B05 | S2 | DF | R00 | ACF06 |  | 081 |  |  |  |  |  |  | 316 | 1465 |  |  |  |  |  | 08 |
| D04M123011C0 |  | DT-04 ; 2nd Fix, Inst of Equipment (FCU,FAN,PUMP) (Mech RM) | 48d | 2011-11-27 | 2012-01-23 | D04M123013C0 SS+12d |  |  |  |  | 124d | 0d | MECHANICAL [2226 h]; Cost |  |  | D04ME23011C0 |  | DT | C | 04 | M1 | ME | 230 | 11 | 2n | BILL 5 | B05 | S2 | 2F | R00 | ACF04 | MEP | 230 |  |  |  |  |  |  |  |  |  |  |  |  | H |  |
| D04M107101C0 |  | DT-04 ; Waterproofing (Mech RM) | 15d | 2012-01-03 | 2012-01-19 | D04M123013C0 |  |  |  |  | 183d | 38d | THERMAL & MOISTURE [3116 m2]; THERMAL & MOISTURE [472 h]; Cost |  |  | I05ME09901C0 |  | DT | C | 04 | M1 | FF | 071 | 01 |  | BILL 5 | B05 | S2 | 01 | R00 | ACF03 |  | 071 |  |  |  |  |  |  | 328 | 1469 |  |  |  |  |  |  |
| D04M123005C0 |  | DT-04 ; 1st Fix, Inst of Ducting (Mech RM) | 54d | 2012-01-03 | 2012-03-06 | D04M123001C0, D04M123013C0, D04M121119C0 FF, D04M123011C0 FF |  |  |  |  | 88d | 0d | MECHANICAL [11402.4 h]; Cost |  |  | D04ME23005C0 |  | DT | C | 04 | M1 | ME | 230 | 05 | 1S | BILL 5 | B05 | S2 | 1F | R00 | ACF04 | MEP | 230 | M1F |  |  |  |  |  |  |  |  |  |  |  |  |  |
| D04M126011C0 |  | DT-04 ; 1st Fix, Inst of Cable Tray (Mech RM) | 48d | 2012-01-03 | 2012-02-28 | D04M123013C0 |  |  |  |  | 94d | 0d | ELECTRICAL [430.8 h]; Cost |  |  | D04ME26011C0 |  | DT | C | 04 | M1 | ME | 260 | 11 | 1S | BILL 5 | B05 | S2 | 1F | R00 | ACF04 | MEP | 260 | M1F |  |  |  |  |  |  |  |  |  |  |  |  |  |
| D04M127020C0 |  | DT-04 ; 2nd Fix, Inst of ELV Equipment (Panels) (Mech RM) | 42d | 2012-01-03 | 2012-02-21 | D04M123013C0 |  |  |  |  | 148d | 60d | ELECTRICAL [1723.2 h]; Cost |  |  | D04ME27020C0 |  | DT | C | 04 | M1 | ME | 270 | 20 | 2n | BILL 5 | B05 | S2 | 2F | R00 | ACF04 | MEP | 270 |  |  |  |  |  |  |  |  |  |  |  |  | E |  |
| D04M121117C0 |  | DT-04 ; 2nd Fix, Inst of Zone Control Valve (Mech RM) | 36d | 2012-01-07 | 2012-02-18 | D04M123013C0, D04M123019C0 |  |  |  |  | 151d | 63d | MECHANICAL [902.4 h]; Cost |  |  | D04ME21117C0 |  | DT | C | 04 | M1 | ME | 211 | 17 | 2n | BILL 5 | B05 | S2 | 2F | R00 | ACF07 | MEP | 211 |  |  |  |  |  |  |  |  |  |  |  |  |  |  |
| D04M127010C0 |  | DT-04 ; 1st Fix, Inst of Trunking for ELV system (Mech RM) | 48d | 2012-01-10 | 2012-03-06 | D04M123005C0 SS+6d |  |  |  |  | 88d | 0d | ELECTRICAL [1689.6 h]; Cost |  |  | D04ME27010C0 |  | DT | C | 04 | M1 | ME | 270 | 10 | 1S | BILL 5 | B05 | S2 | 1F | R00 | ACF04 | MEP | 270 | M1F |  |  |  |  |  |  |  |  |  |  |  |  |  |
| D04M109205C0 |  | DT-04 ; Partitions Closing (Mech RM) | 42d | 2012-01-16 | 2012-03-05 | D04M109201C0, D04M109203C0, D04M122006C0, D04M122011C0, DAFOA09206C1 FF, D04M108101C0 FF, D04M126009C0 FF, D04M123019C0 FF |  |  |  |  | 145d | 0d | PARTITIONS [713 m]; PARTITIONS [5154 h]; Cost |  |  | D04ME09205C0 |  | DT | C | 04 | M1 | PT | 092 | 05 |  | BILL 5 | B05 | S2 | FF | R00 | ACF06 | GP | 092 | P2F |  |  |  |  |  | 315 | 1464 |  |  |  |  |  |  |
| D04M123009C0 |  | DT-04 ; 2nd Fix, Inst of VAV'S CHW connection (Mech RM) | 36d | 2012-01-24 | 2012-03-06 | D04M123011C0 |  |  |  |  | 184d | 96d | MECHANICAL [1684.8 h]; Cost |  |  | D04ME23009C0 |  | DT | C | 04 | M1 | ME | 230 | 09 | 2n | BILL 5 | B05 | S2 | 2F | R00 | ACF07 | MEP | 230 |  |  |  |  |  |  |  |  |  |  |  |  |  |  |
| D04M126007C0 |  | DT-04 ; 2nd Fix, Cable Pulling (Mech RM) | 42d | 2012-02-29 | 2012-04-17 | D04M126011C0 |  |  |  |  | 112d | 12d | ELECTRICAL [6634.8 h]; Cost |  |  | D04ME26007C0 |  | DT | C | 04 | M1 | ME | 260 | 07 | 2n | BILL 5 | B05 | S2 | 2F | R00 | ACF07 | MEP | 260 |  |  |  |  |  |  |  |  |  |  |  |  |  |  |
| D04M109601C0 |  | DT-04 ; Floor Finishes (Mech RM) | 40d | 2012-03-06 | 2012-04-21 | D04M107101C0, D04M109205C0 |  |  |  |  | 145d | 0d | ASSORTED FLOOR FINISH [42624 h]; ASSORTED FLOOR FINISH [23680 m2]; Cost |  |  | D04ME09601C0 |  | DT | C | 04 | M1 | FF | 096 | 01 |  | BILL 5 | B05 | S2 | 01 | R00 | ACF06 |  | FF |  |  |  |  |  |  | 326 | 1501 |  |  |  |  |  |  |
| D04M121115C0 |  | DT-04 ; 2nd Fix, Inst of Sprinkler droppers (Mech RM) | 36d | 2012-03-06 | 2012-04-16 | D04M109205C0, D04M121119C0 |  |  |  |  | 149d | 0d | MECHANICAL [2067.6 h]; Cost |  |  | D04ME21115C0 |  | DT | C | 04 | M1 | ME | 211 | 15 | 2n | BILL 5 | B05 | S2 | 2F | R00 | ACF07 | MEP | 211 |  |  |  |  |  |  |  |  |  |  |  |  |  |  |
| D04M121123C0 |  | DT-04 ; Final Fix, Inst of Fire Extinguishers/FHC (Mech RM) | 48d | 2012-03-06 | 2012-04-30 | D04M109205C0 |  |  |  |  | 185d | 97d | MECHANICAL [5833.2 h]; Cost |  |  | D04ME21123C0 |  | DT | C | 04 | M1 | ME | 211 | 23 | FF | BILL 5 | B05 | S2 | FF | R00 | ACF07 | MEP | 211 |  |  |  |  |  |  |  |  |  |  |  |  |  |  |
| D04M126015C0 |  | DT-04 ; Final Fix, Inst of Ceiling rose (Mech RM) | 48d | 2012-03-06 | 2012-04-30 | D04M109205C0 |  |  |  |  | 185d | 97d | ELECTRICAL [67.2 h]; Cost |  |  | D04ME26015C0 |  | DT | C | 04 | M1 | ME | 260 | 15 | FF | BILL 5 | B05 | S2 | FF | R00 | ACF07 | MEP | 260 |  |  |  |  |  |  |  |  |  |  |  |  |  |  |
| D04M123015C0 |  | DT-04 ; 2nd Fix, Inst of VCD's/FD's (Mech RM) | 36d | 2012-03-07 | 2012-04-17 | D04M123005C0 |  |  |  |  | 100d | 6d | MECHANICAL [4312.8 h]; Cost |  |  | D04ME23015C0 |  | DT | C | 04 | M1 | ME | 230 | 15 | 2n | BILL 5 | B05 | S2 | 2F | R00 | ACF07 | MEP | 230 |  |  |  |  |  |  |  |  |  |  |  |  |  |  |
| D04M123017C0 |  | DT-04 ; 2nd Fix, Insulation of CHW pipe & Duct (Mech RM) | 42d | 2012-03-07 | 2012-04-24 | D04M123005C0, D04M123019C0 |  |  |  |  | 94d | 0d | MECHANICAL [5311.2 h]; Cost |  |  | D04ME23017C0 |  | DT | C | 04 | M1 | ME | 230 | 17 | 2n | BILL 5 | B05 | S2 | 2F | R00 | ACF07 | MEP | 230 |  |  |  |  |  |  |  |  |  |  |  |  |  |  |
| D04M127001C0 |  | DT-04 ; 1st Fix, Wiring/ Cabling work (Mech RM) | 48d | 2012-03-07 | 2012-05-01 | D04M126001C0, D04M126011C0, D04M127010C0 |  |  |  |  | 88d | 0d | ELECTRICAL [436.8 h]; Cost |  |  | D04ME27001C0 |  | DT | C | 04 | M1 | ME | 270 | 01 | 1S | BILL 5 | B05 | S2 | 1F | R00 | ACF04 | MEP | 270 | M1F |  |  |  |  |  |  |  |  |  |  |  |  |  |
| D04M109901C0 |  | DT-04 ; Wall Prime & 1st coat (Mech RM) | 15d | 2012-03-11 | 2012-03-27 | D04CO04003C0, D04M109205C0, D04CO04455C0 FF, DV09GZ04050R2, DV09GZ03351R2 FF |  |  |  |  | 166d | 0d | WALL PAINT [636 h]; WALL PAINT [793 m2]; Cost |  |  | D04ME09901C0 |  | DT | C | 04 | M1 | PA | 099 | 01 |  | BILL 5 | B05 | S2 | 01 | R00 | ACF06 |  | 099 |  |  |  |  |  |  | 328 | 1469 |  |  |  |  |  |  |
| D04M109903C0 |  | DT-04 ; Wall - Final Paint (Mech RM) | 13d | 2012-03-28 | 2012-04-11 | D04M109901C0 |  |  |  |  | 213d | 125d | WALL PAINT [343 h]; WALL PAINT [427 m2]; Cost |  |  | D04ME09903C0 |  | DT | C | 04 | M1 | PA | 099 | 03 |  | BILL 5 | B05 | S2 | 02 | R00 | ACF06 |  | 099 |  |  |  |  |  |  | 329 | 1470 |  |  |  |  |  |  |
| D04M126017C0 |  | DT-04 ; Final Fix, Inst of Switch/Sockets (Mech RM) | 12d | 2012-03-28 | 2012-04-10 | D04M109901C0 |  |  |  |  | 202d | 114d | ELECTRICAL [610.8 h]; Cost |  |  | D04ME26017C0 |  | DT | C | 04 | M1 | ME | 260 | 17 | FF | BILL 5 | B05 | S2 | FF | R00 | ACF07 | MEP | 260 |  |  |  |  |  |  |  |  |  |  |  |  |  |  |
| D04M126019C0 |  | DT-04 ; Final Fix, Inst of Light fittings (Mech RM) | 48d | 2012-03-28 | 2012-05-22 | D04M109901C0 |  |  |  |  | 166d | 78d | ELECTRICAL [6626.4 h]; Cost |  |  | D04ME26019C0 |  | DT | C | 04 | M1 | ME | 260 | 19 | FF | BILL 5 | B05 | S2 | FF | R00 | ACF07 | MEP | 260 |  |  |  |  |  |  |  |  |  |  |  |  |  |  |
| D04M121121C0 |  | DT-04 ; Final Fix, Inst of Sprinklers head (Mech RM) | 48d | 2012-04-17 | 2012-06-11 | D04M121115C0 |  |  |  |  | 149d | 61d | MECHANICAL [403.2 h]; Cost |  |  | D04ME21121C0 |  | DT | C | 04 | M1 | ME | 211 | 21 | FF | BILL 5 | B05 | S2 | FF | R00 | ACF07 | MEP | 211 |  |  |  |  |  |  |  |  |  |  |  |  |  |  |
| D04M108105C0 |  | DT-04 ; Metal Doors (Mech RM) | 24d | 2012-04-22 | 2012-05-19 | D04M108101C0, D04M109901C0, D04M109601C0 |  |  |  |  | 145d | 0d | METAL DOORS [2180 h]; METAL DOORS [218 no]; Cost |  |  | D04ME08105C0 |  | DT | C | 04 | M1 | DO | 081 | 05 |  | BILL 5 | B05 | S2 | DR | R00 | ACF06 |  | 081 |  |  |  |  |  |  | 317 | 1466 |  |  |  |  |  | 08 |
| D04M122003C0 |  | DT-04 ; Final Fix, Inst of All drain (Mech RM) | 12d | 2012-04-22 | 2012-05-05 | D04M109601C0 |  |  |  |  | 181d | 93d | PLUMBING [1173.6 h]; Cost |  |  | D04ME22003C0 |  | DT | C | 04 | M1 | ME | 220 | 03 | FF | BILL 5 | B05 | S2 | FF | R00 | ACF07 | MEP | 220 |  |  |  |  |  |  |  |  |  |  |  |  |  |  |
| D04M123023C0 |  | DT-04 ; 2nd Fix, Inst of Flexible Duct & Plenum boxes (Mech RM) | 48d | 2012-04-25 | 2012-06-20 | D04M123015C0, D04M123017C0 |  |  |  |  | 94d | 0d | MECHANICAL [274.8 h]; Cost |  |  | D04ME23023C0 |  | DT | C | 04 | M1 | ME | 230 | 23 | FF | BILL 5 | B05 | S2 | FF | R00 | ACF07 | MEP | 230 |  |  |  |  |  |  |  |  |  |  |  |  |  |  |
| D04M126005C0 |  | DT-04 ; 2nd Fix, Wiring for Power/Lighting/Emergency (Mech RM) | 36d | 2012-05-02 | 2012-06-12 | D04M126001C0, D04M126007C0, D04M126011C0, D04M127001C0, D04M127010C0 |  |  |  |  | 100d | 0d | ELECTRICAL [436.8 h]; Cost |  |  | D04ME26005C0 |  | DT | C | 04 | M1 | ME | 260 | 05 | 2n | BILL 5 | B05 | S2 | 2F | R00 | ACF07 | MEP | 260 |  |  |  |  |  |  |  |  |  |  |  |  |  |  |
| D04M127003C0 |  | DT-04 ; Final Fix, BMS connection work to Equipment (Mech RM) | 48d | 2012-05-02 | 2012-06-27 | D04M121117C0, D04M123011C0, D04M123013C0, D04M123015C0, D04M126009C0, D04M127001C0, D04M127020C0 |  |  |  |  | 88d | 0d | ELECTRICAL [29847.6 h]; Cost |  |  | D04ME27003C0 |  | DT | C | 04 | M1 | ME | 270 | 03 | FF | BILL 5 | B05 | S2 | FF | R00 | ACF07 | MEP | 270 |  |  |  |  |  |  |  |  |  |  |  |  |  |  |
| D04M108709C0 |  | DT-04 ; Ironmongery (Mech RM) | 36d | 2012-05-20 | 2012-07-01 | D04M108105C0 |  |  |  |  | 145d | 57d | IRONMONGERY [1260 h]; IRONMONGERY [126 no]; Cost |  |  | D04ME08709C0 |  | DT | C | 04 | M1 | DO | 087 | 09 |  | BILL 5 | B05 | S2 | IM | R00 | ACF06 |  | 087 |  |  |  |  |  |  | 322 | 1467 |  |  |  |  |  | 08 |
| D04M126013C0 |  | DT-04 ; Final Fix, Termination & Gladding of Cables (Mech RM) | 48d | 2012-06-13 | 2012-08-08 | D04M109205C0, D04M126005C0 |  |  |  |  | 100d | 12d | ELECTRICAL [368.4 h]; Cost |  |  | D04ME26013C0 |  | DT | C | 04 | M1 | ME | 260 | 13 | FF | BILL 5 | B05 | S2 | FF | R00 | ACF07 | MEP | 260 |  |  |  |  |  |  |  |  |  |  |  |  |  |  |
| D04M123021C0 |  | DT-04 ; Final Fix, Inst of Grilles & Diffusers (Mech RM) | 48d | 2012-06-21 | 2012-08-15 | D04M123023C0 |  |  |  |  | 94d | 6d | MECHANICAL [2560.8 h]; Cost |  |  | D04ME23021C0 |  | DT | C | 04 | M1 | ME | 230 | 21 | FF | BILL 5 | B05 | S2 | FF | R00 | ACF07 | MEP | 230 |  |  |  |  |  |  |  |  |  |  |  |  |  |  |
| D04M127030C0 |  | DT-04 ; Final Fix, Inst of ELV device (Detector/Speaker) (Mech RM) | 48d | 2012-06-28 | 2012-08-25 | D04M109901C0, D04M123009C0, D04M127020C0, D04ER27020C0, D04M127003C0 |  |  |  |  | 88d | 0d | ELECTRICAL [2152.8 h]; Cost |  |  | D04ME27030C0 |  | DT | C | 04 | M1 | ME | 270 | 30 | FF | BILL 5 | B05 | S2 | FF | R00 | ACF07 | MEP | 270 |  |  |  |  |  |  |  |  |  |  |  |  |  |  |

| ID | WBS | Activity | Duration | Start | Finish | Predecessors | Complete | Remaining | Planned start | Planned finish | Total float | Free float | Resources | Cost | Actual cost | change id | CCAD BUILDING(SET) | CCAD PHASE(SET) | CCAD FLOOR(SET) | CCAD ZONE(SET) | CCAD WORK(SET) | CCAD SECTION(SET) | CCAD SERIAL No.(SET) | CCAD CBS(SET) | CCAD BILL(SET) | CCAD HANDOVER(SET) | CCAD TAG(SET) | CCAD REV(SET) | CCADACF (SET) | CCAD SSCF | RENZ % COMPLETE | CCAD SUB ZONE MEP(SET) | CCAD CSA | Act Selector % | user_number8 | user_integer1 | user_integer2 | user_number7 | Claimed This Month | Change Order # | NEW ACTIVITY ID | P_811 | P_711 | PERCENT COMPLETE | July2011 Target% Complete | CCAD MEQ | CCAD DIVISION(SET) |
| --- | --- | --- | --- | --- | --- | --- | --- | --- | --- | --- | --- | --- | --- | --- | --- | --- | --- | --- | --- | --- | --- | --- | --- | --- | --- | --- | --- | --- | --- | --- | --- | --- | --- | --- | --- | --- | --- | --- | --- | --- | --- | --- | --- | --- | --- | --- | --- |
|  | 10 | **Precommissioning Tesing & snagging (Mech-1)** |  | 2012-08-26 | 2012-11-28 |  |  |  |  |  |  |  |  |  |  |  |  |  |  |  |  |  |  |  |  |  |  |  |  |  |  |  |  |  |  |  |  |  |  |  |  |  |  |  |  |  |  |
| D04TS01801C0 |  | DT-04 ; MEP de-snag, FIREM sign-off | 12d | 2012-08-26 | 2012-09-08 | D04M121123C0, D04M126015C0, D04M126017C0, D04M126019C0, D04M127030C0, D04M122003C0, D04M123023C0, D04M121121C0, D04M127003C0, D04M123021C0, D04M126013C0, D04CO04413C1 |  |  |  |  | 88d | 0d | TESTING & COMMISSIONING [2549 h]; Cost |  |  | D04TS01801C0 | DT | C | 04 | TS | SC | 018 | 01 | BILL 5 | B05 | S2 | 01 | R00 | ACF07 | 018 |  |  |  |  |  |  |  |  |  |  |  |  |  |  |  |  |  |
| D04TS01806C0 |  | DT-04 ; Touch-up & Clean / JV inspection /CIR /De-snag | 18d | 2012-09-09 | 2012-09-29 | D04M108709C0, D04M109601C0, D04M109903C0, D04TS01801C0 |  |  |  |  | 88d | 41.62d | TESTING & COMMISSIONING [213 h]; Cost |  |  | D04TS01802C0 | DT | C | 04 | TS | SC | 018 | 02 | BILL 5 | B05 | S2 | 02 | R00 | ACF07 | 018 |  |  |  |  |  |  |  |  |  |  |  |  |  |  |  |  |  |
| D04TS01809C0 |  | DT-04 ; Consultant's final de-snag inspection | 7d | 2012-11-20 | 2012-11-28 | D04TS01806C0, D04TS01810C0 |  |  |  |  | 46.38d | 37.35d | Labor General [1 h]; Cost |  |  | D04TS01803C0 | DT | C | 04 | TS | SC | 018 | 03 | BILL 5 | B05 | S2 | 03 | R00 | ACF07 | 018 |  |  |  |  |  |  |  |  |  |  |  |  |  |  |  |  |  |
|  | 03 | **Mech -2** |  | 2011-04-17 | 2012-11-20 |  |  |  |  |  |  |  |  |  |  |  |  |  |  |  |  |  |  |  |  |  |  |  |  |  |  |  |  |  |  |  |  |  |  |  |  |  |  |  |  |  |  |
| D04M223001C0 |  | DT-04 ; 1st Fix, Inst. of Supports for MEP (Mech RM-2) | 36d | 2011-04-17 A | 2011-05-30 A | D04S107807C0 SS, D04S307807C0 SS | 100% |  | 2011-04-09 | 2011-05-21 |  |  | MECHANICAL [1338 h]; Cost [75432.9 AED] | 75,432.94 | 75,432.94 | D04M223001C0 | DT | C | 04 | M2 | ME | 230 | 01 | BILL 5 | B05 | S2 | 1F | R00 | ACF04 | 230 | 100 | 1S | MEP | M1F |  |  |  |  |  |  |  |  |  |  |  |  |  |
| D04M209201C0 |  | DT-04 ; Metal Studs (Mech RM-2) | 42d | 2011-05-16 A | 2011-11-09 | D04M109201C0 SS+6d, D04M223001C0 | 26% | 31.08d | 2011-07-23 | 2011-09-12 | 25d | 0d | PARTITIONS [7362 h]; PARTITIONS - Metal Studs [1020 m]; Cost |  |  | D04M209201C0 | DT | C | 04 | M2 | PT | 092 | 01 | BILL 5 | B05 | S2 | 1F | R00 | ACF06 | 092 | 5 |  | GP | PMS | 0 | 0 | 0 | 0 | 117751.28 |  |  |  |  |  |  |  |  |
| D04M209203C0 |  | DT-04 ; Partitions 1st face (Mech RM-2) | 60d | 2011-05-17 A | 2011-12-04 | D04M209201C0 SS+12d | 16% | 50.4d | 2011-08-06 | 2011-10-17 | 184.97d | 42.6d | PARTITIONS [1020 m]; PARTITIONS [5754 h]; Cost |  |  | D04M209203C0 | DT | C | 04 | M2 | PT | 092 | 03 | BILL 5 | B05 | S2 | 2F | R00 | ACF06 | 092 | 2 |  | GP | P1F | 0 | 0 | 0 | 0 | 52744.25 | 314 | 1463 | 15 | 12 |  |  |  |  |
| D04M221111C0 |  | DT-04 ; 1st Fix, Inst of Sprinkler main pipe (Mech RM-2) | 90d | 2011-08-10 A | 2011-11-24 | D04M223001C0 | 50% | 45d | 2011-09-07 | 2011-12-26 | 46.38d | 0d | MECHANICAL [981.6 h]; Cost [53543.7 AED] | 53,543.69 | 26,771.85 | D04M221111C0 | DT | C | 04 | M2 | ME | 211 | 11 | BILL 5 | B05 | S2 | 1F | R00 | ACF04 | 211 |  | 1S | MEP | M1F |  |  |  |  |  |  |  | 50 | 0 |  |  |  |  |
| D04M221119C0 |  | DT-04 ; 1st Fix, Inst of Sprinkler branch pipe (Mech RM-2) | 90d | 2011-08-10 A | 2012-01-19 | D04M221111C0 | 50% | 45d | 2011-12-17 | 2012-04-01 | 181.38d | 39d | MECHANICAL [1441.2 h]; Cost [78749.8 AED] | 78,749.79 | 39,374.9 | D04M221119C0 | DT | C | 04 | M2 | ME | 211 | 19 | BILL 5 | B05 | S2 | 1F | R00 | ACF04 | 211 |  | 1S | MEP | M1F |  |  |  |  |  |  |  | 50 | 0 |  |  |  |  |
| D04M223013C0 |  | DT-04 ; 2nd Fix, Inst of Equipment (AHU) (Mech RM-2) | 100d | 2011-08-10 A | 2011-12-26 | D04S107807C0, D04S207807C0, D04S307807C0, D04M221111C0 | 75% | 25d | 2011-08-06 | 2011-12-07 | 46.38d | 0d | MECHANICAL [52650 h]; Cost [11980949 AED] | 11,980,948.98 | 8,985,711.73 | D04M223013C0 | DT | C | 04 | M2 | ME | 230 | 13 | BILL 5 | B05 | S2 | 2F | R00 | ACF04 | 230 |  | 2n | MEP |  | 0 | 0 | 0 | 0 |  |  |  | 70 | 0 | 75 | 60 | H |  |
| D04M226009C0 |  | DT-04 ; 2nd Fix, Inst of Equipment (DB, TR, SG) (Mech RM-2) | 48d | 2011-09-05 A | 2011-11-14 | D04S107807C0, D04S207807C0, D04S307807C0 | 25% | 36d | 2011-09-01 | 2011-10-26 | 235.38d | 93d | ELECTRICAL [10124.4 h]; Cost [2303986 AED] | 2,303,985.68 | 575,996.42 | D04M226009C0 | DT | C | 04 | M2 | ME | 260 | 09 | BILL 5 | B05 | S2 | 2F | R00 | ACF04 | 260 |  | 2n | MEP |  |  |  |  |  |  |  |  |  |  |  |  | E |  |
| D04M223019C0 |  | DT-04 ; 1st Fix, Inst of CHW pipe (Mech RM-2) | 78d | 2011-10-01 | 2012-01-05 | D04M221111C0 SS+7d, D04M223001C0 |  |  |  |  | 181.38d | 0d | MECHANICAL [6325.2 h]; Cost |  |  | D04M223019C0 | DT | C | 04 | M2 | ME | 230 | 19 | BILL 5 | B05 | S2 | 1F | R00 | ACF04 | 230 |  | 1S | MEP | M1F |  |  |  |  |  |  |  |  |  |  |  |  |  |
| D04M226001C0 |  | DT-04 ; 1st Fix, Inst of Trunking/Conduiting (Mech RM-2) | 48d | 2011-10-01 | 2011-11-29 | D04M223001C0 |  |  |  |  | 142.38d | 0d | ELECTRICAL [824.4 h]; Cost |  |  | D04M226001C0 | DT | C | 04 | M2 | ME | 260 | 01 | BILL 5 | B05 | S2 | 1F | R00 | ACF04 | 260 |  | 1S | MEP | M1F |  |  |  |  |  |  |  |  |  |  |  |  |  |
| D04M222011C0 |  | DT-04 ; 1st Fix, Inst of Drainage pipe (Mech RM-2) | 48d | 2011-10-17 | 2011-12-17 | D04M223001C0, D04M226001C0 SS+14d |  |  |  |  | 142.38d | 0d | PLUMBING [1173.6 h]; Cost |  |  | D04M222011C0 | DT | C | 04 | M2 | ME | 220 | 11 | BILL 5 | B05 | S2 | 1F | R00 | ACF04 | 220 |  | 1S | MEP | M1F |  |  |  |  |  |  |  |  |  |  |  |  |  |
| D04M222006C0 |  | DT-04 ; 1st Fix, Inst of Water supply pipe (Mech RM-2) | 72d | 2011-10-25 | 2012-01-23 | D04M222011C0 SS+7d, D04M223001C0 |  |  |  |  | 142.38d | 0d | PLUMBING [4896 h]; Cost |  |  | D04M222006C0 | DT | C | 04 | M2 | ME | 220 | 06 | BILL 5 | B05 | S2 | 1F | R00 | ACF04 | 220 |  | 1S | MEP | M1F |  |  |  |  |  |  |  |  |  |  |  |  |  |
| D04M208101C0 |  | DT-04 ; Metal Door Frames (Mech RM-2) | 18d | 2011-11-27 | 2011-12-18 | D04M209201C0, GNHE08101C0 FS+93d |  |  |  |  | 208.38d | 66d | METAL DOORS [158 h]; Cost |  |  | D04M208101C0 | DT | C | 04 | M2 | DO | 081 | 01 | BILL 5 | B05 | S2 | DF | R00 | ACF06 | 081 |  |  |  |  |  |  |  |  |  | 316 | 1465 |  |  |  |  |  | 08 |
| D04M223005C0 |  | DT-04 ; 1st Fix, Inst of Ducting (Mech RM-2) | 84d | 2011-11-27 | 2012-03-06 | D04M223001C0, D04M223013C0 SS |  |  |  |  | 46.38d | 0d | MECHANICAL [11402.4 h]; Cost |  |  | D04M223005C0 | DT | C | 04 | M2 | ME | 230 | 05 | BILL 5 | B05 | S2 | 1F | R00 | ACF04 | 230 |  | 1S | MEP | M1F |  |  |  |  |  |  |  |  |  |  |  |  |  |
| D04M107102C0 |  | DT-04 ; Waterproofing (Mech RM-2) | 15d | 2011-12-27 | 2012-01-14 | D04M223013C0 |  |  |  |  | 190.38d | 0d | THERMAL & MOISTURE [2375 m2]; THERMAL & MOISTURE [360 h]; Cost |  |  | I05ME09901C0 | DT | C | 04 | M2 | FF | 071 | 01 | BILL 5 | B05 | S2 | 01 | R00 | ACF03 | 071 |  |  |  |  |  |  |  |  |  | 328 | 1469 |  |  |  |  |  |  |
| D04M223011C0 |  | DT-04 ; 2nd Fix, Inst of Equipment (FCU,FAN,PUMP) (Mech RM-2) | 48d | 2011-12-27 | 2012-02-22 | D04M223013C0 |  |  |  |  | 147.38d | 0d | MECHANICAL [2226 h]; Cost |  |  | D04M223011C0 | DT | C | 04 | M2 | ME | 230 | 11 | BILL 5 | B05 | S2 | 2F | R00 | ACF04 | 230 |  | 2n | MEP |  |  |  |  |  |  |  |  |  |  |  |  | H |  |
| D04M226011C0 |  | DT-04 ; 1st Fix, Inst of Cable Tray (Mech RM-2) | 48d | 2011-12-27 | 2012-02-22 | D04M223013C0 |  |  |  |  | 105.38d | 0d | ELECTRICAL [430.8 h]; Cost |  |  | D04M226011C0 | DT | C | 04 | M2 | ME | 260 | 11 | BILL 5 | B05 | S2 | 1F | R00 | ACF04 | 260 |  | 1S | MEP | M1F |  |  |  |  |  |  |  |  |  |  |  |  |  |
| D04M227020C0 |  | DT-04 ; 2nd Fix, Inst of ELV Equipment (Panels) (Mech RM-2) | 42d | 2011-12-27 | 2012-02-15 | D04M223013C0 |  |  |  |  | 189.38d | 47d | ELECTRICAL [1723.2 h]; Cost |  |  | D04M227020C0 | DT | C | 04 | M2 | ME | 270 | 20 | BILL 5 | B05 | S2 | 2F | R00 | ACF04 | 270 |  | 2n | MEP |  |  |  |  |  |  |  |  |  |  |  |  | E |  |
| D04M221117C0 |  | DT-04 ; 2nd Fix, Inst of Zone Control Valve (Mech RM-2) | 36d | 2012-01-07 | 2012-02-18 | D04M223013C0, D04M223019C0 |  |  |  |  | 193.38d | 111d | MECHANICAL [902.4 h]; Cost |  |  | D04M221117C0 | DT | C | 04 | M2 | ME | 211 | 17 | BILL 5 | B05 | S2 | 2F | R00 | ACF07 | 211 |  | 2n | MEP |  |  |  |  |  |  |  |  |  |  |  |  |  |  |
| D04M209601C0 |  | DT-04 ; Floor Finishes (Mech RM-2) | 36d | 2012-01-15 | 2012-02-26 | D04M107102C0 |  |  |  |  | 190.38d | 0d | ASSORTED FLOOR FINISH [27056 h]; ASSORTED FLOOR FINISH [16531 m2]; Cost |  |  | D04M209601C0 | DT | C | 04 | M2 | FF | 096 | 01 | BILL 5 | B05 | S2 | 01 | R00 | ACF06 | FF |  |  |  |  |  |  |  |  |  | 326 | 1501 |  |  |  |  |  |  |
| D04M209205C0 |  | DT-04 ; Partitions Closing (Mech RM-2) | 36d | 2012-01-24 | 2012-03-06 | D04M209201C0, D04M209203C0, D04M222006C0, D04M222011C0, DAFOA09206C1 FF, D04M208101C0 FF, D04M226009C0 FF |  |  |  |  | 142.38d | 0d | PARTITIONS [1020 m]; PARTITIONS [7378 h]; Cost |  |  | D04M209205C0 | DT | C | 04 | M2 | PT | 092 | 05 | BILL 5 | B05 | S2 | FF | R00 | ACF06 | 092 |  |  | GP | P2F |  |  |  |  |  | 315 | 1464 |  |  |  |  |  |  |
| D04M223009C0 |  | DT-04 ; 2nd Fix, Inst of VAV'S CHW connection (Mech RM-2) | 36d | 2012-02-23 | 2012-04-04 | D04M223011C0 |  |  |  |  | 147.38d | 5d | MECHANICAL [1684.8 h]; Cost |  |  | D04M223009C0 | DT | C | 04 | M2 | ME | 230 | 09 | BILL 5 | B05 | S2 | 2F | R00 | ACF07 | 230 |  | 2n | MEP |  |  |  |  |  |  |  |  |  |  |  |  |  |  |
| D04M226007C0 |  | DT-04 ; 2nd Fix, Cable Pulling (Mech RM-2) | 42d | 2012-02-23 | 2012-04-11 | D04M226011C0 |  |  |  |  | 111.38d | 65d | ELECTRICAL [6634.8 h]; Cost |  |  | D04M226007C0 | DT | C | 04 | M2 | ME | 260 | 07 | BILL 5 | B05 | S2 | 2F | R00 | ACF07 | 260 |  | 2n | MEP |  |  |  |  |  |  |  |  |  |  |  |  |  |  |
| D04M222003C0 |  | DT-04 ; Final Fix, Inst of All drain (Mech RM-2) | 12d | 2012-02-27 | 2012-03-11 | D04M209601C0 |  |  |  |  | 222.38d | 176d | PLUMBING [1173.6 h]; Cost |  |  | D04M222003C0 | DT | C | 04 | M2 | ME | 220 | 03 | BILL 5 | B05 | S2 | FF | R00 | ACF07 | 220 |  | FF | MEP |  |  |  |  |  |  |  |  |  |  |  |  |  |  |
| D04M209901C0 |  | DT-04 ; Wall Prime & 1st coat (Mech RM-2) | 30d | 2012-03-07 | 2012-04-10 | D04CO04003C0, D04M209205C0, D04CO04455C0 FF |  |  |  |  | 142.38d | 0d | WALL PAINT [1830 h]; WALL PAINT [2283 m2]; Cost |  |  | D04M209901C0 | DT | C | 04 | M2 | PA | 099 | 01 | BILL 5 | B05 | S2 | 01 | R00 | ACF06 | 099 |  |  |  |  |  |  |  |  |  | 328 | 1469 |  |  |  |  |  |  |
| D04M221115C0 |  | DT-04 ; 2nd Fix, Inst of Sprinkler droppers (Mech RM-2) | 36d | 2012-03-07 | 2012-04-17 | D04M209205C0, D04M221119C0 |  |  |  |  | 142.38d | 0d | MECHANICAL [2067.6 h]; Cost |  |  | D04M221115C0 | DT | C | 04 | M2 | ME | 211 | 15 | BILL 5 | B05 | S2 | 2F | R00 | ACF07 | 211 |  | 2n | MEP |  |  |  |  |  |  |  |  |  |  |  |  |  |  |
| D04M221123C0 |  | DT-04 ; Final Fix, Inst of Fire Extinguishers/FHC (Mech RM-2) | 48d | 2012-03-07 | 2012-05-01 | D04M209205C0 |  |  |  |  | 178.38d | 132d | MECHANICAL [5833.2 h]; Cost |  |  | D04M221123C0 | DT | C | 04 | M2 | ME | 211 | 23 | BILL 5 | B05 | S2 | FF | R00 | ACF07 | 211 |  | FF | MEP |  |  |  |  |  |  |  |  |  |  |  |  |  |  |
| D04M223015C0 |  | DT-04 ; 2nd Fix, Inst of VCD's/FD's (Mech RM-2) | 36d | 2012-03-07 | 2012-04-17 | D04M223005C0 |  |  |  |  | 94.38d | 0d | MECHANICAL [4312.8 h]; Cost |  |  | D04M223015C0 | DT | C | 04 | M2 | ME | 230 | 15 | BILL 5 | B05 | S2 | 2F | R00 | ACF07 | 230 |  | 2n | MEP |  |  |  |  |  |  |  |  |  |  |  |  |  |  |
| D04M223017C0 |  | DT-04 ; 2nd Fix, Insulation of CHW pipe & Duct (Mech RM-2) | 42d | 2012-03-07 | 2012-04-24 | D04M223005C0, D04M223019C0 |  |  |  |  | 130.38d | 36d | MECHANICAL [5311.2 h]; Cost |  |  | D04M223017C0 | DT | C | 04 | M2 | ME | 230 | 17 | BILL 5 | B05 | S2 | 2F | R00 | ACF07 | 230 |  | 2n | MEP |  |  |  |  |  |  |  |  |  |  |  |  |  |  |
| D04M226015C0 |  | DT-04 ; Final Fix, Inst of Ceiling rose (Mech RM-2) | 48d | 2012-03-07 | 2012-05-01 | D04M209205C0 |  |  |  |  | 178.38d | 132d | ELECTRICAL [67.2 h]; Cost |  |  | D04M226015C0 | DT | C | 04 | M2 | ME | 260 | 15 | BILL 5 | B05 | S2 | FF | R00 | ACF07 | 260 |  | FF | MEP |  |  |  |  |  |  |  |  |  |  |  |  |  |  |
| D04M227010C0 |  | DT-04 ; 1st Fix, Inst of Trunking for ELV system (Mech RM-2) | 48d | 2012-03-07 | 2012-05-01 | D04M223005C0 |  |  |  |  | 46.38d | 0d | ELECTRICAL [1689.6 h]; Cost |  |  | D04M227010C0 | DT | C | 04 | M2 | ME | 270 | 10 | BILL 5 | B05 | S2 | 1F | R00 | ACF04 | 270 |  | 1S | MEP | M1F |  |  |  |  |  |  |  |  |  |  |  |  |  |
| D04M208105C0 |  | DT-04 ; Metal Doors (Mech RM-2) | 22d | 2012-04-11 | 2012-05-06 | D04M208101C0, D04M209901C0, D04M209601C0 |  |  |  |  | 152.38d | 0d | METAL DOORS [630 h]; METAL DOORS [63 no]; Cost |  |  | D04M208105C0 | DT | C | 04 | M2 | DO | 081 | 05 | BILL 5 | B05 | S2 | DR | R00 | ACF06 | 081 |  |  |  |  |  |  |  |  |  | 317 | 1466 |  |  |  |  |  | 08 |
| D04M209903C0 |  | DT-04 ; Wall - Final Paint (Mech RM-2) | 18d | 2012-04-11 | 2012-05-01 | D04M209901C0 |  |  |  |  | 190.38d | 144d | WALL PAINT [986 h]; WALL PAINT [1229 m2]; Cost |  |  | D04M209903C0 | DT | C | 04 | M2 | PA | 099 | 03 | BILL 5 | B05 | S2 | 02 | R00 | ACF06 | 099 |  |  |  |  |  |  |  |  |  | 329 | 1470 |  |  |  |  |  |  |
| D04M226017C0 |  | DT-04 ; Final Fix, Inst of Switch/Sockets (Mech RM-2) | 12d | 2012-04-11 | 2012-04-24 | D04M209901C0 |  |  |  |  | 184.38d | 138d | ELECTRICAL [610.8 h]; Cost |  |  | D04M226017C0 | DT | C | 04 | M2 | ME | 260 | 17 | BILL 5 | B05 | S2 | FF | R00 | ACF07 | 260 |  | FF | MEP |  |  |  |  |  |  |  |  |  |  |  |  |  |  |
| D04M226019C0 |  | DT-04 ; Final Fix, Inst of Light fittings (Mech RM-2) | 48d | 2012-04-11 | 2012-06-05 | D04M209901C0 |  |  |  |  | 148.38d | 102d | ELECTRICAL [6626.4 h]; Cost |  |  | D04M226019C0 | DT | C | 04 | M2 | ME | 260 | 19 | BILL 5 | B05 | S2 | FF | R00 | ACF07 | 260 |  | FF | MEP |  |  |  |  |  |  |  |  |  |  |  |  |  |  |
| D04M227030C0 |  | DT-04 ; Final Fix, Inst of ELV device (Detector/Speaker) (Mech RM-2) | 54d | 2012-04-11 | 2012-06-12 | D04M209901C0, D04M223009C0, D04M227020C0 |  |  |  |  | 142.38d | 96d | ELECTRICAL [2152.8 h]; Cost |  |  | D04M227030C0 | DT | C | 04 | M2 | ME | 270 | 30 | BILL 5 | B05 | S2 | FF | R00 | ACF07 | 270 |  | FF | MEP |  |  |  |  |  |  |  |  |  |  |  |  |  |  |
| D04M221121C0 |  | DT-04 ; Final Fix, Inst of Sprinklers head (Mech RM-2) | 48d | 2012-04-18 | 2012-06-12 | D04M221115C0 |  |  |  |  | 142.38d | 96d | MECHANICAL [403.2 h]; Cost |  |  | D04M221121C0 | DT | C | 04 | M2 | ME | 211 | 21 | BILL 5 | B05 | S2 | FF | R00 | ACF07 | 211 |  | FF | MEP |  |  |  |  |  |  |  |  |  |  |  |  |  |  |
| D04M223023C0 |  | DT-04 ; 2nd Fix, Inst of Flexible Duct & Plenum boxes (Mech RM-2) | 48d | 2012-04-18 | 2012-06-12 | D04M223015C0, D04M223017C0 SS |  |  |  |  | 94.38d | 0d | MECHANICAL [274.8 h]; Cost |  |  | D04M223023C0 | DT | C | 04 | M2 | ME | 230 | 23 | BILL 5 | B05 | S2 | FF | R00 | ACF07 | 230 |  | FF | MEP |  |  |  |  |  |  |  |  |  |  |  |  |  |  |
| D04M227001C0 |  | DT-04 ; 1st Fix, Wiring/ Cabling work (Mech RM-2) | 48d | 2012-05-02 | 2012-06-27 | D04M226001C0, D04M226011C0, D04M227010C0 |  |  |  |  | 46.38d | 0d | ELECTRICAL [436.8 h]; Cost |  |  | D04M227001C0 | DT | C | 04 | M2 | ME | 270 | 01 | BILL 5 | B05 | S2 | 1F | R00 | ACF04 | 270 |  | 1S | MEP | M1F |  |  |  |  |  |  |  |  |  |  |  |  |  |
| D04M208709C0 |  | DT-04 ; Ironmongery (Mech RM-2) | 34d | 2012-05-07 | 2012-06-14 | D04M208105C0 |  |  |  |  | 152.38d | 106d | IRONMONGERY [880 h]; IRONMONGERY [88 no]; Cost |  |  | D04M208709C0 | DT | C | 04 | M2 | DO | 087 | 09 | BILL 5 | B05 | S2 | IM | R00 | ACF06 | 087 |  |  |  |  |  |  |  |  |  | 322 | 1467 |  |  |  |  |  | 08 |
| D04M223021C0 |  | DT-04 ; Final Fix, Inst of Grilles & Diffusers (Mech RM-2) | 48d | 2012-06-13 | 2012-08-08 | D04M223023C0 |  |  |  |  | 94.38d | 48d | MECHANICAL [2560.8 h]; Cost |  |  | D04M223021C0 | DT | C | 04 | M2 | ME | 230 | 21 | BILL 5 | B05 | S2 | FF | R00 | ACF07 | 230 |  | FF | MEP |  |  |  |  |  |  |  |  |  |  |  |  |  |  |
| D04M226005C0 |  | DT-04 ; 2nd Fix, Wiring for Power/Lighting/Emergency (Mech RM-2) | 36d | 2012-06-28 | 2012-08-08 | D04M226001C0, D04M226007C0, D04M226011C0, D04M227001C0, D04M227010C0 |  |  |  |  | 46.38d | 0d | ELECTRICAL [436.8 h]; Cost |  |  | D04M226005C0 | DT | C | 04 | M2 | ME | 260 | 05 | BILL 5 | B05 | S2 | 2F | R00 | ACF07 | 260 |  | 2n | MEP |  |  |  |  |  |  |  |  |  |  |  |  |  |  |
| D04M227003C0 |  | DT-04 ; Final Fix, BMS connection work to Equipment (Mech RM-2) | 48d | 2012-06-28 | 2012-08-25 | D04M221117C0, D04M223011C0, D04M223013C0, D04M223015C0, D04M226009C0, D04M227001C0, D04M227020C0 |  |  |  |  | 82.38d | 36d | ELECTRICAL [34638 h]; Cost |  |  | D04M227003C0 | DT | C | 04 | M2 | ME | 270 | 03 | BILL 5 | B05 | S2 | FF | R00 | ACF07 | 270 |  | FF | MEP |  |  |  |  |  |  |  |  |  |  |  |  |  |  |
| D04M226013C0 |  | DT-04 ; Final Fix, Termination & Gladding of Cables (Mech RM-2) | 48d | 2012-08-09 | 2012-10-06 | D04M209205C0, D04M226005C0 |  |  |  |  | 46.38d | 0d | ELECTRICAL [368.4 h]; Cost |  |  | D04M226013C0 | DT | C | 04 | M2 | ME | 260 | 13 | BILL 5 | B05 | S2 | FF | R00 | ACF07 | 260 |  | FF | MEP |  |  |  |  |  |  |  |  |  |  |  |  |  |  |

| ID | WBS | Activity | Duration | Start | Finish | Predecessors | Complete | Remaining | Planned start | Planned finish | Total float | Free float | Resources | Cost | Actual cost | change id | CCAD BUILDING(SET) | CCAD PHASE(SET) | CCAD FLOOR(SET) | CCAD ZONE(SET) | CCAD WORK(SET) | CCAD SECTION(SET) | CCAD SERIAL No.(SET) | CCAD CBS(SET) | CCAD BILL(SET) | CCAD HANDOVER(SET) | CCAD TAG(SET) | CCAD REV(SET) | CCADACF (SET) | CCAD SSCF | RENZ % COMPLETE | CCAD SUB ZONE MEP(SET) | CCAD CSA | Act Selector % | user_number8 | user_integer1 | user_integer2 | user_number7 | Change Order # | NEW ACTIVITY ID | Claimed This Month | P_811 | P_711 | July2011 Target% Complete | CCAD MEQ | CCAD DIVISION(SET) |
| --- | --- | --- | --- | --- | --- | --- | --- | --- | --- | --- | --- | --- | --- | --- | --- | --- | --- | --- | --- | --- | --- | --- | --- | --- | --- | --- | --- | --- | --- | --- | --- | --- | --- | --- | --- | --- | --- | --- | --- | --- | --- | --- | --- | --- | --- | --- |
|  | 10 | **Precommissioning Tesing & snagging (Mech-2)** |  | 2012-10-07 | 2012-11-20 |  |  |  |  |  |  |  |  |  |  |  |  |  |  |  |  |  |  |  |  |  |  |  |  |  |  |  |  |  |  |  |  |  |  |  |  |  |  |  |  |  |
| D04TS01804C0 |  | DT-04 ; MEP de-snag, FIREM sign-off | 12d | 2012-10-07 | 2012-10-20 | D04M221123C0, D04M226015C0, D04M226017C0, D04M226019C0, D04M223023C0, D04M223021C0, D04M221121C0, D04M227003C0, D04M222003C0, D04M226013C0, D04M227030C0, D04CO04413C1 |  |  |  |  | 46.38d | 0d | TESTING & COMMISSIONING [1275 h]; Cost |  |  | D04TS01801C0 | DT | C | 04 | TS | SC | 018 | 01 | BILL 5 | B05 | S2 | 01 | R00 | ACF07 | 018 |  |  |  |  |  |  |  |  |  |  |  |  |  |  |  |  |
| D04TS01807C0 |  | DT-04 ; Touch-up & Clean / JV inspection /CIR /De-snag | 17.75d | 2012-10-21 | 2012-11-12 | D04M208709C0, D04M209201C0, D04M209601C0, D04M209903C0, D04TS01804C0 |  |  |  |  | 46.38d | 0d | TESTING & COMMISSIONING [213 h]; Cost |  |  | D04TS01802C0 | DT | C | 04 | TS | SC | 018 | 02 | BILL 5 | B05 | S2 | 02 | R00 | ACF07 | 018 |  |  |  |  |  |  |  |  |  |  |  |  |  |  |  |  |
| D04TS01810C0 |  | DT-04 ; Consultant's final de-snag inspection | 5.88d | 2012-11-12 | 2012-11-20 | D04TS01807C0, D04TS01811C0 |  |  |  |  | 46.38d | 0d | Labor General [1 h]; Cost |  |  | D04TS01803C0 | DT | C | 04 | TS | SC | 018 | 03 | BILL 5 | B05 | S2 | 03 | R00 | ACF07 | 018 |  |  |  |  |  |  |  |  |  |  |  |  |  |  |  |  |
|  | 04 | **HV Rm, Trans Rm, LV Rm** |  | 2011-04-06 | 2012-06-07 |  |  |  |  |  |  |  |  |  |  |  |  |  |  |  |  |  |  |  |  |  |  |  |  |  |  |  |  |  |  |  |  |  |  |  |  |  |  |  |  |  |
| D04ER23010C0 |  | DT-04 ; 1st Fix, Inst. of Supports for MEP (Elec RM) | 36d | 2011-04-06 A | 2011-05-30 A | D04S107807C0 SS, D04S207807C0 SS, D04S307807C0 SS | 100% |  | 2011-04-09 | 2011-05-21 |  |  | MECHANICAL [1338 h]; Cost [75432.9 AED] | 75,432.94 | 75,432.94 | D04ER23010C0 | DT | C | 04 | ER | ME | 230 | 10 | BILL 5 | B05 | S2 | 1F | R00 | ACF04 | 230 | 100 | 1S | MEP | M1F |  |  |  |  |  |  |  |  |  |  |  |  |
| D04ER09201C0 |  | DT-04 ; Metal Studs (Elec RM) | 30d | 2011-05-10 A | 2011-10-26 | D04ER23010C0, D04S107807C0, D04S207807C0, D04S307807C0 | 26% | 22.2d | 2011-07-09 | 2011-08-13 | 25d | 0d | PARTITIONS [1097 h]; PARTITIONS - Metal Studs [152 m]; Cost |  |  | D04ER09201C0 | DT | C | 04 | ER | PT | 092 | 01 | BILL 5 | B05 | S2 | 1F | R00 | ACF06 | 092 | 5 |  | GP | PMS | 0 | 0 | 0 | 0 | 313 | 1372 | 10664.26 |  |  |  |  |  |
| D04ER09203C0 |  | DT-04 ; Partitions 1st face (Elec RM) | 60d | 2011-05-18 A | 2011-12-04 | D04ER09201C0 SS+12d, D04ER09201C0 FF | 16% | 50.4d | 2011-07-23 | 2011-10-03 | 36.6d | 12.6d | PARTITIONS [152 m]; PARTITIONS [870 h]; Cost |  |  | D04ER09203C0 | DT | C | 04 | ER | PT | 092 | 03 | BILL 5 | B05 | S2 | 2F | R00 | ACF06 | 092 | 2 |  | GP | P1F | 0 | 0 | 0 | 0 | 314 | 1373 | 7961.4 | 15 | 12 |  |  |  |
| D04ER26024C0 |  | DT-04 ; 2nd Fix, Inst of Equipment (DB, TR, SG) (Elec RM) | 148d | 2011-07-19 A | 2011-11-03 | D04S107807C0, D04S207807C0, D04S307807C0 | 80% | 30d | 2012-03-28 | 2012-09-20 | 128d | 104d | ELECTRICAL [10124.4 h]; Cost [2303986 AED] | 2,303,985.68 | 1,843,188.54 | D04ER26024C0 | DT | C | 04 | ER | ME | 260 | 24 | BILL 5 | B05 | S2 | 2F | R00 | ACF04 | 260 |  | 2n | MEP |  |  |  |  |  |  |  |  | 80 | 40 | 75 | E |  |
| D04ER26010C0 |  | DT-04 ; 1st Fix, Inst of Trunking/Conduiting (Elec RM) | 36d | 2011-10-01 | 2011-11-14 | D04ER23010C0, D04S107807C0, D04S207807C0, D04S307807C0 |  |  |  |  | 28d | 0d | ELECTRICAL [824.4 h]; Cost |  |  | D04ER26010C0 | DT | C | 04 | ER | ME | 260 | 10 | BILL 5 | B05 | S2 | 1F | R00 | ACF04 | 260 |  | 1S | MEP | M1F |  |  |  |  |  |  |  |  |  |  |  |  |
| D04ER27010C0 |  | DT-04 ; 1st Fix, Inst of Trunking for ELV system (Elec RM) | 36d | 2011-10-17 | 2011-12-01 | D04ER23010C0, D04ER26010C0 SS+14d, D04S107807C0, D04S207807C0, D04S307807C0 |  |  |  |  | 28d | 0d | ELECTRICAL [1689.6 h]; Cost |  |  | D04ER27010C0 | DT | C | 04 | ER | ME | 270 | 10 | BILL 5 | B05 | S2 | 1F | R00 | ACF04 | 270 |  | 1S | MEP | M1F |  |  |  |  |  |  |  |  |  |  |  |  |
| D04ER26012C0 |  | DT-04 ; 1st Fix, Inst of Cable Tray (Elec RM) | 48d | 2011-10-25 | 2011-12-25 | D04ER23010C0, D04ER27010C0 SS+7d, D04S107807C0, D04S207807C0, D04S307807C0 |  |  |  |  | 57d | 0d | ELECTRICAL [430.8 h]; Cost |  |  | D04ER26012C0 | DT | C | 04 | ER | ME | 260 | 12 | BILL 5 | B05 | S2 | 1F | R00 | ACF04 | 260 |  | 1S | MEP | M1F |  |  |  |  |  |  |  |  |  |  |  |  |
| D04ER23012C0 |  | DT-04 ; 1st Fix, Inst of CHW pipe (Elec RM) | 36d | 2011-10-29 | 2011-12-14 | D04ER23010C0, D04ER27010C0 SS+10d |  |  |  |  | 30d | 0d | MECHANICAL [6325.2 h]; Cost |  |  | D04ER23012C0 | DT | C | 04 | ER | ME | 230 | 12 | BILL 5 | B05 | S2 | 1F | R00 | ACF04 | 230 |  | 1S | MEP | M1F |  |  |  |  |  |  |  |  |  |  |  |  |
| D04ER09205C0 |  | DT-04 ; Partitions Closing (Elec RM) | 36d | 2011-11-01 | 2011-12-18 | D04ER09201C0, D04ER09203C0 SS, DAFAF26039C0, DAFAF26045C0 FF, DAFOA09206C1 FF, D04ER09203C0 FF, D04ER08101C0 FF |  |  |  |  | 24d | 0d | PARTITIONS [152 m]; PARTITIONS [1121 h]; Cost |  |  | D04ER09205C0 | DT | C | 04 | ER | PT | 092 | 05 | BILL 5 | B05 | S2 | FF | R00 | ACF06 | 092 |  |  | GP | P2F |  |  |  |  |  | 1540 |  |  |  |  |  |  |
| D04ER23014C0 |  | DT-04 ; 1st Fix, Inst of Ducting (Elec RM) | 36d | 2011-11-09 | 2011-12-22 | D04ER23010C0, D04ER23012C0 SS+7d |  |  |  |  | 59d | 0d | MECHANICAL [11402.4 h]; Cost |  |  | D04ER23014C0 | DT | C | 04 | ER | ME | 230 | 14 | BILL 5 | B05 | S2 | 1F | R00 | ACF04 | 230 |  | 1S | MEP | M1F |  |  |  |  |  |  |  |  |  |  |  |  |
| D04ER23016C0 |  | DT-04 ; 1st Fix, Inst of VCD's/FD's (Elec RM) | 30d | 2011-11-09 | 2011-12-15 | D04ER23014C0 SS |  |  |  |  | 65d | 41d | MECHANICAL [4312.8 h]; Cost |  |  | D04ER23016C0 | DT | C | 04 | ER | ME | 230 | 16 | BILL 5 | B05 | S2 | 1F | R00 | ACF04 | 230 |  | 1S | MEP | M1F |  |  |  |  |  |  |  |  |  |  |  |  |
| D04ER23024C0 |  | DT-04 ; 2nd Fix, Inst of VCD's/FD's (Elec RM) | 36d | 2011-11-09 | 2011-12-22 | D04ER23014C0 SS |  |  |  |  | 59d | 35d | MECHANICAL [4312.8 h]; Cost |  |  | D04ER23024C0 | DT | C | 04 | ER | ME | 230 | 24 | BILL 5 | B05 | S2 | 2F | R00 | ACF07 | 230 |  | 2n | MEP |  |  |  |  |  |  |  |  |  |  |  |  |  |
| D04ER26020C0 |  | DT-04 ; 2nd Fix, Wiring for Power/Lighting/Emergency (Elec RM) | 36d | 2011-11-15 | 2011-12-28 | D04ER26010C0 |  |  |  |  | 122d | 98d | ELECTRICAL [436.8 h]; Cost |  |  | D04ER26020C0 | DT | C | 04 | ER | ME | 260 | 20 | BILL 5 | B05 | S2 | 2F | R00 | ACF07 | 260 |  | 2n | MEP |  |  |  |  |  |  |  |  |  |  |  |  |  |
| D04ER08101C0 |  | DT-04 ; Metal Door Frames (Elec RM) | 18d | 2011-11-27 | 2011-12-18 | D04ER09201C0, GNHE08101C0 FS+93d |  |  |  |  | 24d | 0d | METAL DOORS [175 h]; Cost |  |  | D04ER08101C0 | DT | C | 04 | ER | DO | 081 | 01 | BILL 5 | B05 | S2 | DF | R00 | ACF06 | 081 |  |  |  |  |  |  |  |  | 316 | 1374 |  |  |  |  |  | 08 |
| D04ER27012C0 |  | DT-04 ; 1st Fix, Wiring/ Cabling work (Elec RM) | 48d | 2011-12-04 | 2012-01-29 | D04ER27010C0 |  |  |  |  | 28d | 0d | ELECTRICAL [436.8 h]; Cost |  |  | D04ER27012C0 | DT | C | 04 | ER | ME | 270 | 12 | BILL 5 | B05 | S2 | 1F | R00 | ACF04 | 270 |  | 1S | MEP | M1F |  |  |  |  |  |  |  |  |  |  |  |  |
| D04ER23020C0 |  | DT-04 ; 2nd Fix, Inst of VAV'S CHW connection (Elec RM) | 36d | 2011-12-15 | 2012-01-26 | D04ER23010C0, D04ER23012C0 |  |  |  |  | 30d | 6d | MECHANICAL [1684.8 h]; Cost |  |  | D04ER23020C0 | DT | C | 04 | ER | ME | 230 | 20 | BILL 5 | B05 | S2 | 2F | R00 | ACF07 | 230 |  | 2n | MEP |  |  |  |  |  |  |  |  |  |  |  |  |  |
| D04ER23026C0 |  | DT-04 ; 2nd Fix, Insulation of CHW pipe & Duct (Elec RM) | 36d | 2011-12-15 | 2012-01-26 | D04ER23010C0, D04ER23012C0 |  |  |  |  | 30d | 6d | MECHANICAL [5311.2 h]; Cost |  |  | D04ER23026C0 | DT | C | 04 | ER | ME | 230 | 26 | BILL 5 | B05 | S2 | 2F | R00 | ACF07 | 230 |  | 2n | MEP |  |  |  |  |  |  |  |  |  |  |  |  |  |
| D04ER09901C0 |  | DT-04 ; Wall Prime & 1st coat (Elec RM) | 20d | 2011-12-19 | 2012-01-11 | D04CO04003C0, D04ER09205C0 |  |  |  |  | 24d | 0d | ASSORTED WALL FINISH [20 h]; Cost |  |  | D04ER09901C0 | DT | C | 04 | ER | PA | 099 | 01 | BILL 5 | B05 | S2 | 01 | R00 | ACF06 | 099 |  |  |  |  |  |  |  |  | 328 | 1378 |  |  |  |  |  |  |
| D04ER23022C0 |  | DT-04 ; 2nd Fix, Inst of Equipment (FCU,FAN) (Elec RM) | 42d | 2011-12-19 | 2012-02-07 | D04ER09205C0 |  |  |  |  | 57d | 0d | MECHANICAL [1588.8 h]; Cost |  |  | D04ER23022C0 | DT | C | 04 | ER | ME | 230 | 22 | BILL 5 | B05 | S2 | 2F | R00 | ACF04 | 230 |  | 2n | MEP |  |  |  |  |  |  |  |  |  |  |  | H |  |
| D04ER27020C0 |  | DT-04 ; 2nd Fix, Inst of ELV Equipment (Panels) (Elec RM) | 42d | 2011-12-19 | 2012-02-07 | D04ER09205C0 |  |  |  |  | 105d | 81d | ELECTRICAL [1723.2 h]; Cost |  |  | D04ER27020C0 | DT | C | 04 | ER | ME | 270 | 20 | BILL 5 | B05 | S2 | 2F | R00 | ACF04 | 270 |  | 2n | MEP |  |  |  |  |  |  |  |  |  |  |  | E |  |
| D04ER26022C0 |  | DT-04 ; 2nd Fix, Cable Pulling (Elec RM) | 42d | 2011-12-26 | 2012-02-14 | D04ER26012C0 |  |  |  |  | 83d | 59d | ELECTRICAL [6634.8 h]; Cost |  |  | D04ER26022C0 | DT | C | 04 | ER | ME | 260 | 22 | BILL 5 | B05 | S2 | 2F | R00 | ACF07 | 260 |  | 2n | MEP |  |  |  |  |  |  |  |  |  |  |  |  |  |
| D04ER05501C0 |  | DT-04 ; Handrails & balustrade (Elec RM) | 36d | 2012-01-12 | 2012-02-23 | D04ER09901C0 |  |  |  |  | 91d | 67d | SECONDARY STEEL [417 h]; Cost |  |  | D04ER05501C0 | DT | C | 04 | ER | SW | 055 | 01 | BILL 5 | B05 | S2 | 01 | R00 | ACF03 | a |  |  |  |  |  |  |  |  |  |  |  |  |  |  |  |  |
| D04ER08106C0 |  | DT-04 ; Steel Platform Access Floor (Elec RM) | 19d | 2012-01-12 | 2012-02-02 | D04ER09901C0 |  |  |  |  | 24d | 0d | ASSORTED DOORS [88 h]; Cost |  |  | CP2ER08105C0 | DT | C | 04 | ER | DO | 081 | 06 | BILL 5 | B05 | S2 | 04 | R00 | ACF06 | 081 |  |  |  |  |  |  |  |  | 317 | 1375 |  |  |  |  |  | 08 |
| D04ER09903C0 |  | DT-04 ; Wall - Final Paint (Elec RM) | 20d | 2012-01-12 | 2012-02-05 | D04ER09901C0 |  |  |  |  | 91d | 67d | ASSORTED WALL FINISH [10 h]; Cost |  |  | D04ER09903C0 | DT | C | 04 | ER | PA | 099 | 03 | BILL 5 | B05 | S2 | 02 | R00 | ACF06 | 099 |  |  |  |  |  |  |  |  | 329 | 1379 |  |  |  |  |  |  |
| D04ER26030C0 |  | DT-04 ; Final Fix, Termination & Gladding of Cables (Elec RM) | 36d | 2012-01-30 | 2012-03-12 | D04ER27012C0 |  |  |  |  | 60d | 36d | ELECTRICAL [368.4 h]; Cost |  |  | D04ER26030C0 | DT | C | 04 | ER | ME | 260 | 30 | BILL 5 | B05 | S2 | FF | R00 | ACF07 | 260 |  | FF | MEP |  |  |  |  |  |  |  |  |  |  |  |  |  |
| D04ER09501C0 |  | DT-04 ; Ceiling Grid and and Service Tile (Elec RM) | 32d | 2012-02-05 | 2012-03-12 | D04ER09205C0 SS+15d, D04ER23012C0, D04ER23014C0, D04ER23016C0, D04ER23020C0, D04ER23024C0, D04ER23026C0, D04ER26010C0, D04ER26012C0, D04ER27012C0, D04ER08106C0, D04ER09901C0 |  |  |  |  | 24d | 0d | CEILING GRID FOR GYPSUM [1232.11 h]; Cost |  |  | D04ER09501C0 | DT | C | 04 | ER | CE | 095 | 01 | BILL 5 | B05 | S2 | 01 | R00 | ACF06 | 095 |  |  |  |  |  |  |  |  | 323 | 1408 |  |  |  |  |  |  |
| D04ER09601C0 |  | DT-04 ; Floor Finishes (Elec RM) | 26d | 2012-02-08 | 2012-03-08 | D04ER09901C0, D04ER23022C0 |  |  |  |  | 57d | 0d | ASSORTED FLOOR FINISH [6440 h]; ASSORTED FLOOR FINISH [3574 m2]; Cost |  |  | D04ER09601C0 | DT | C | 04 | ER | FF | 096 | 01 | BILL 5 | B05 | S2 | 01 | R00 | ACF06 | FF |  |  |  |  |  |  |  |  | 326 | 1377 |  |  |  |  |  |  |
| D04ER21109C0 |  | DT-04 ; Final Fix, Gaseous Fire Suppression (Elec RM) | 36d | 2012-02-08 | 2012-03-20 | D04ER23022C0 |  |  |  |  | 69d | 29d | MECHANICAL [12560.4 h]; Cost |  |  | D04ER21109C0 | DT | C | 04 | ER | ME | 211 | 09 | BILL 5 | B05 | S2 | FF | R00 | ACF07 | 211 |  | FF | MEP |  |  |  |  |  |  |  |  |  |  |  |  |  |
| D04ER08105C0 |  | DT-04 ; Metal Doors (Elec RM) | 22d | 2012-03-10 | 2012-04-03 | D04ER08101C0, D04ER09901C0, D04ER09601C0 |  |  |  |  | 57d | 0d | METAL DOORS [700 h]; METAL DOORS [70 no]; Cost |  |  | D04ER08105C0 | DT | C | 04 | ER | DO | 081 | 05 | BILL 5 | B05 | S2 | DR | R00 | ACF06 | 081 |  |  |  |  |  |  |  |  | 317 | 1375 |  |  |  |  |  | 08 |
| D04ER22037C0 |  | DT-04 ; Final Fix, Inst of All drain (Elec RM) | 12d | 2012-03-10 | 2012-03-22 | D04ER09601C0 |  |  |  |  | 67d | 27d | PLUMBING [1173.6 h]; Cost |  |  | D04ER22037C0 | DT | C | 04 | ER | ME | 220 | 37 | BILL 5 | B05 | S2 | FF | R00 | ACF07 | 220 |  | FF | MEP |  |  |  |  |  |  |  |  |  |  |  |  |  |
| D04ER09905C0 |  | DT-04 ; Ceiling Prime & 1st coat (Elec RM) | 28d | 2012-03-13 | 2012-04-14 | D04ER09501C0 |  |  |  |  | 36d | 0d | ASSORTED CEILING FINISH [588 h]; Cost |  |  | D04ER09905C0 | DT | C | 04 | ER | PA | 099 | 05 | BILL 5 | B05 | S2 | 01 | R00 | ACF06 | 099 |  |  |  |  |  |  |  |  |  | 1544 |  |  |  |  |  |  |
| D04ER21124C0 |  | DT-04 ; 2nd Fix, Inst of Zone Control Valve (Elec RM) | 36d | 2012-03-13 | 2012-04-23 | D04ER09501C0 |  |  |  |  | 40d | 0d | MECHANICAL [902.4 h]; Cost |  |  | D04ER21124C0 | DT | C | 04 | ER | ME | 211 | 24 | BILL 5 | B05 | S2 | 2F | R00 | ACF07 | 211 |  | 2n | MEP |  |  |  |  |  |  |  |  |  |  |  |  |  |
| D04ER23030C0 |  | DT-04 ; Final Fix, Inst of Grilles & Diffusers (Elec RM) | 30d | 2012-03-13 | 2012-04-16 | D04ER09501C0 |  |  |  |  | 46d | 6d | MECHANICAL [2560.8 h]; Cost |  |  | D04ER23030C0 | DT | C | 04 | ER | ME | 230 | 30 | BILL 5 | B05 | S2 | FF | R00 | ACF07 | 230 |  | FF | MEP |  |  |  |  |  |  |  |  |  |  |  |  |  |
| D04ER23032C0 |  | DT-04 ; 2nd Fix, Inst of Flexible Duct & Plenum boxes (Elec RM) | 36d | 2012-03-13 | 2012-04-23 | D04ER09205C0, D04ER09501C0 |  |  |  |  | 24d | 0d | MECHANICAL [274.8 h]; Cost |  |  | D04ER23032C0 | DT | C | 04 | ER | ME | 230 | 32 | BILL 5 | B05 | S2 | FF | R00 | ACF07 | 230 |  | FF | MEP |  |  |  |  |  |  |  |  |  |  |  |  |  |
| D04ER26032C0 |  | DT-04 ; Final Fix, Inst of Ceiling rose (Elec RM) | 36d | 2012-03-13 | 2012-04-23 | D04ER09501C0 |  |  |  |  | 40d | 0d | ELECTRICAL [67.2 h]; Cost |  |  | D04ER26032C0 | DT | C | 04 | ER | ME | 260 | 32 | BILL 5 | B05 | S2 | FF | R00 | ACF07 | 260 |  | FF | MEP |  |  |  |  |  |  |  |  |  |  |  |  |  |
| D04ER26034C0 |  | DT-04 ; Final Fix, Inst of Switch/Sockets (Elec RM) | 12d | 2012-03-13 | 2012-03-26 | D04ER09501C0, D04ER09501C0 FF |  |  |  |  | 48d | 24d | ELECTRICAL [610.8 h]; Cost |  |  | D04ER26034C0 | DT | C | 04 | ER | ME | 260 | 34 | BILL 5 | B05 | S2 | FF | R00 | ACF07 | 260 |  | FF | MEP |  |  |  |  |  |  |  |  |  |  |  |  |  |
| D04ER26039C0 |  | DT-04 ; Final Fix, Inst of Light fittings (Elec RM) | 36d | 2012-03-13 | 2012-04-23 | D04ER09501C0 |  |  |  |  | 24d | 0d | ELECTRICAL [6626.4 h]; Cost |  |  | D04ER26039C0 | DT | C | 04 | ER | ME | 260 | 39 | BILL 5 | B05 | S2 | FF | R00 | ACF07 | 260 |  | FF | MEP |  |  |  |  |  |  |  |  |  |  |  |  |  |
| D04ER27022C0 |  | DT-04 ; 2nd Fix, Wiring Droppers (Elec RM) | 36d | 2012-03-13 | 2012-04-23 | D04ER09501C0 |  |  |  |  | 24d | 0d | ELECTRICAL [436.8 h]; Cost |  |  | D04ER27022C0 | DT | C | 04 | ER | ME | 270 | 22 | BILL 5 | B05 | S2 | 2F | R00 | ACF07 | 270 |  | 2n | MEP |  |  |  |  |  |  |  |  |  |  |  |  |  |
| D04ER27030C0 |  | DT-04 ; Final Fix, Inst of ELV device (Detector/Speaker) (Elec RM) | 36d | 2012-03-13 | 2012-04-23 | D04ER09501C0 |  |  |  |  | 24d | 0d | ELECTRICAL [2152.8 h]; Cost |  |  | D04ER27030C0 | DT | C | 04 | ER | ME | 270 | 30 | BILL 5 | B05 | S2 | FF | R00 | ACF07 | 270 |  | FF | MEP |  |  |  |  |  |  |  |  |  |  |  |  |  |
| D04ER27032C0 |  | DT-04 ; Final Fix, BMS connection work to Equipment (Elec RM) | 36d | 2012-03-13 | 2012-04-23 | D04ER26024C0, D04ER09501C0 |  |  |  |  | 24d | 0d | ELECTRICAL [29847.6 h]; Cost |  |  | D04ER27032C0 | DT | C | 04 | ER | ME | 270 | 32 | BILL 5 | B05 | S2 | FF | R00 | ACF07 | 270 |  | FF | MEP |  |  |  |  |  |  |  |  |  |  |  |  |  |
| D04ER08709C0 |  | DT-04 ; Ironmongery (Elec RM) | 20d | 2012-04-04 | 2012-04-26 | D04ER08105C0 |  |  |  |  | 189.38d | 13d | IRONMONGERY [190 h]; IRONMONGERY [19 no]; Cost |  |  | D04ER08709C0 | DT | C | 04 | ER | DO | 087 | 09 | BILL 5 | B05 | S2 | IM | R00 | ACF06 | 087 |  |  |  |  |  |  |  |  | 322 | 6230 |  |  |  |  |  | 08 |
| D04ER09907C0 |  | DT-04 ; Ceiling - Final Paint (Elec RM) | 12d | 2012-04-15 | 2012-04-28 | D04ER09905C0 |  |  |  |  | 36d | 12d | ASSORTED CEILING FINISH [318 h]; Cost |  |  | D04ER09907C0 | DT | C | 04 | ER | PA | 099 | 07 | BILL 5 | B05 | S2 | 02 | R00 | ACF06 | 099 |  |  |  |  |  |  |  |  |  | 1546 |  |  |  |  |  |  |
| D04ER09503C0 |  | DT-04 ; Ceiling closure (Elec RM) | 16d | 2012-04-24 | 2012-05-12 | D04ER09501C0, D04ER26020C0, D04ER26022C0, D04ER27012C0, DAFOA09505C1 FF, D04ER27022C0, D04ER26030C0, D04ER26034C0, D04ER26039C0, D04ER27030C0, D04ER27032C0, D04ER09903C0, D04ER05501C0 FF, D04ER27020C0 FF, D04ER09905C0 FF, D04ER26032C0 FF, D04ER09907C0 FF, D04ER22037C0 FF, D04ER21124C0 FF, D04ER23032C0 |  |  |  |  | 24d | 0d | CEILING GYPSUM [77.9 h]; Cost |  |  | D04ER09503C0 | DT | C | 04 | ER | CE | 095 | 03 | BILL 5 | B05 | S2 | 02 | R00 | ACF06 | 095 |  |  |  |  |  |  |  |  | 324 | 1409 |  |  |  |  |  |  |

| ID | WBS | Activity | Duration | Start | Finish | Predecessors | Complete | Remaining | Planned start | Planned finish | Total float | Free float | Resources | Cost | Actual cost | change id | CCAD BUILDING(SET) | CCAD PHASE(SET) | CCAD FLOOR(SET) | CCAD ZONE(SET) | CCAD WORK(SET) | CCAD SECTION(SET) | CCAD SERIAL No.(SET) | CCAD CBS(SET) | CCAD BILL(SET) | CCAD HANDOVER(SET) | CCAD TAG(SET) | CCAD REV(SET) | CCADACF (SET) | CCAD SSCF | Change Order # | NEW ACTIVITY ID | CCAD CSA | Act Selector % | P_811 | P_711 | CCAD SUB ZONE MEP(SET) | CCAD MEQ | CCAD DIVISION(SET) | IDDD |
| --- | --- | --- | --- | --- | --- | --- | --- | --- | --- | --- | --- | --- | --- | --- | --- | --- | --- | --- | --- | --- | --- | --- | --- | --- | --- | --- | --- | --- | --- | --- | --- | --- | --- | --- | --- | --- | --- | --- | --- | --- |
|  | 10 | **Precommissioning Tesing & snagging (HV Rm, Trans Rm, LV Rm)** |  | 2012-04-24 | 2012-06-07 |  |  |  |  |  |  |  |  |  |  |  |  |  |  |  |  |  |  |  |  |  |  |  |  |  |  |  |  |  |  |  |  |  |  |  |
| D04TS01805C0 |  | DT-04 ; MEP de-snag, FIREM sign-off | 12d | 2012-04-24 | 2012-05-07 | D04ER23032C0, D04ER26032C0, D04ER21109C0, D04ER23030C0, D04ER26030C0, D04ER26034C0, D04ER26039C0, D04ER27030C0, D04ER22037C0, D04ER27032C0, D04CO04413C1, D04ER21124C0 |  |  |  |  | 180.38d | 4d | TESTING & COMMISSIONING [1275 h]; Cost |  |  | D04TS01801C0 | DT | C | 04 | TS | SC | 018 | 01 | BILL 5 | B05 | S2 | 01 | R00 | ACF07 | 018 |  |  |  |  |  |  |  |  |  |  |
| D04TS01808C0 |  | DT-04 ; Touch-up & Clean / JV inspection /CIR /De-snag | 16.75d | 2012-05-13 | 2012-05-31 | D04ER08709C0, D04ER09601C0, D04ER09903C0, D04ER09907C0, D04TS01805C0, D04ER05501C0, D04ER09503C0 |  |  |  |  | 176.38d | 0d | TESTING & COMMISSIONING [213 h]; Cost |  |  | D04TS01802C0 | DT | C | 04 | TS | SC | 018 | 02 | BILL 5 | B05 | S2 | 02 | R00 | ACF07 | 018 |  |  |  |  |  |  |  |  |  |  |
| D04TS01811C0 |  | DT-04 ; Consultant's final de-snag inspection | 6d | 2012-05-31 | 2012-06-07 | D04TS01808C0, D01TS01815C0 |  |  |  |  | 176.38d | 130d | Labor General [1 h]; Cost |  |  | D04TS01803C0 | DT | C | 04 | TS | SC | 018 | 03 | BILL 5 | B05 | S2 | 03 | R00 | ACF07 | 018 |  |  |  |  |  |  |  |  |  |  |
|  | 05 | **TR Room** |  | 2011-07-10 | 2012-07-01 |  |  |  |  |  |  |  |  |  |  |  |  |  |  |  |  |  |  |  |  |  |  |  |  |  |  |  |  |  |  |  |  |  |  |  |
| D04TR09201C0 |  | DT-04 ; Metal Studs (TR RM) | 42d | 2011-07-10 A | 2011-11-09 | D04ER09201C0 SS, D04M109201C0 SS, D04M209201C0 SS | 26% | 31.08d | 2011-07-03 | 2011-08-21 | 25d | 0d | PARTITIONS [289 h]; PARTITIONS - Metal Studs [40 m]; Cost |  |  | D04TR09201C0 | DT | C | 04 | TR | PT | 092 | 01 | BILL 5 | B05 | S2 | 1F | R00 | ACF06 | 092 | 313 | 885 | GP | PMS |  |  |  |  |  |  |
| D04TR09203C0 |  | DT-04 ; Partitions 1st face (TR RM) | 45d | 2011-07-10 A | 2011-11-16 | D04TR09201C0 SS+12d | 16% | 37.8d | 2011-07-17 | 2011-09-10 | 29.2d | 4.2d | PARTITIONS [40 m]; PARTITIONS [210 h]; Cost |  |  | D04TR09203C0 | DT | C | 04 | TR | PT | 092 | 03 | BILL 5 | B05 | S2 | 2F | R00 | ACF06 | 092 | 314 | 886 | GP | P1F | 15 | 12 |  |  |  |  |
| D04TR26009C0 |  | DT-04 ; 2nd Fix, Inst of Equipment (DB, TR, SG,BUS) (TR RM) | 100d | 2011-08-10 A | 2012-02-09 | D04TR09205C0, D04CO26501R02 FF | 65% | 35d | 2011-10-11 | 2012-02-12 | 26d | 0d | ELECTRICAL [14310 h]; Cost [3256347 AED] | 3,256,347.19 | 2,116,625.67 | D04TR26009C0 | DT | C | 04 | TR | ME | 260 | 09 | BILL 5 | B05 | S2 | 2F | R00 | ACF04 | 260 |  |  | MEP |  | 65 | 0 | 2n | E |  |  |
| D04TR26026C0 |  | DT-04 ; 2nd Fix, Conduit (TR RM) | 30d | 2011-10-01 | 2011-11-03 | D04TR09201C0 SS+6d |  |  |  |  | 25d | 0d | ELECTRICAL [824.4 h]; Cost |  |  | D04TR26026C0 | DT | C | 04 | TR | ME | 260 | 26 | BILL 5 | B05 | S2 | 2F | R00 | ACF07 | 260 |  |  | MEP |  |  |  | 2n |  |  |  |
| D04TR01005C0 |  | DT-04 ; 2nd, Wall Inspection by Consultant (TR RM) | 12d | 2011-11-05 | 2011-11-21 | D04TR26026C0 |  |  |  |  | 25d | 0d | Labor General [1.2 h]; Cost |  |  | D04TR01005C0 | DT | C | 04 | TR | ME | 010 | 05 | BILL 5 | B05 | S2 | WI | R00 | ACF07 | 010 |  |  | MEP |  |  |  | 2n |  |  |  |
| D04TR09205C0 |  | DT-04 ; Partitions Closing (TR RM) | 30d | 2011-11-22 | 2011-12-28 | D04TR01005C0, D04TR09201C0, D04TR09203C0, DAFOA09206C1 FF, D04TR08101C0 FF |  |  |  |  | 25d | 0d | PARTITIONS [40 m]; PARTITIONS [271 h]; Cost |  |  | D04TR09205C0 | DT | C | 04 | TR | PT | 092 | 05 | BILL 5 | B05 | S2 | FF | R00 | ACF06 | 092 | 315 | 887 | GP | P2F |  |  |  |  |  |  |
| D04TR08101C0 |  | DT-04 ; Door Frames (TR RM) | 24d | 2011-11-27 | 2011-12-25 | D04TR09201C0, GNHE08101C0 FS+93d |  |  |  |  | 28d | 3d | ASSORTED DOORS [1320 h]; Cost |  |  | D04TR08101C0 | DT | C | 04 | TR | DO | 081 | 01 | BILL 5 | B05 | S2 | DF | R00 | ACF06 | 081 | 316 | 20001090 |  |  |  |  |  |  | 08 |  |
| D04TR09901C0 |  | DT-04 ; Wall Prime & 1st coat (TR RM) | 18d | 2011-12-29 | 2012-01-19 | D04CO04003C0, D04TR09205C0 |  |  |  |  | 25d | 0d | WALL PAINT [77 h]; WALL PAINT [95 m2]; Cost |  |  | D04TR09901C0 | DT | C | 04 | TR | PA | 099 | 01 | BILL 5 | B05 | S2 | 01 | R00 | ACF06 | 099 | 360 | 20001110 |  |  |  |  |  |  |  |  |
| D04TR23009C0 |  | DT-04 ; 2nd Fix, Inst of VAV'S CHW connection (TR RM) | 30d | 2011-12-29 | 2012-02-02 | D04TR09205C0 |  |  |  |  | 25d | 0d | MECHANICAL [1684.8 h]; Cost |  |  | D04TR23009C0 | DT | C | 04 | TR | ME | 230 | 09 | BILL 5 | B05 | S2 | 2F | R00 | ACF07 | 230 |  |  | MEP |  |  |  | 2n |  |  |  |
| D04TR23011C0 |  | DT-04 ; 2nd Fix, Inst of VCD's/FD's (TR RM) | 30d | 2011-12-29 | 2012-02-02 | D04TR09205C0 |  |  |  |  | 25d | 0d | MECHANICAL [4312.8 h]; Cost |  |  | D04TR23011C0 | DT | C | 04 | TR | ME | 230 | 11 | BILL 5 | B05 | S2 | 2F | R00 | ACF07 | 230 |  |  | MEP |  |  |  | 2n |  |  |  |
| D04TR26007C0 |  | DT-04 ; 2nd Fix, Cable Pulling (TR RM) | 30d | 2011-12-29 | 2012-02-02 | D04TR09203C0, D04TR09205C0 |  |  |  |  | 55d | 30d | ELECTRICAL [6634.8 h]; Cost |  |  | D04TR26007C0 | DT | C | 04 | TR | ME | 260 | 07 | BILL 5 | B05 | S2 | 2F | R00 | ACF07 | 260 |  |  | MEP |  |  |  | 2n |  |  |  |
| D04TR26027C0 |  | DT-04 ; 2nd Fix, Wiring / Cabling (TR RM) | 30d | 2011-12-29 | 2012-02-02 | D04TR09205C0 |  |  |  |  | 67d | 42d | ELECTRICAL [436.8 h]; Cost |  |  | D04TR26027C0 | DT | C | 04 | TR | ME | 260 | 27 | BILL 5 | B05 | S2 | 2F | R00 | ACF07 | 260 | 417 | 1318 | MEP |  |  |  | 2n |  |  |  |
| D04TR27002C0 |  | DT-04 ; 2nd Fix, Dressing of ELV panels (TR RM) | 30d | 2011-12-29 | 2012-02-02 | D04TR09205C0, D04TR27020C0 SS |  |  |  |  | 31d | 0d | ELECTRICAL [333.6 h]; Cost |  |  | D04TR27002C0 | DT | C | 04 | TR | ME | 270 | 02 | BILL 5 | B05 | S2 | 2F | R00 | ACF07 | 270 |  |  | MEP |  |  |  | 2n |  |  |  |
| D04TR27020C0 |  | DT-04 ; 2nd Fix, Inst of ELV Equipment (Panels) (TR RM) | 30d | 2011-12-29 | 2012-02-02 | D04TR09205C0 |  |  |  |  | 31d | 0d | ELECTRICAL [1723.2 h]; Cost |  |  | D04TR27020C0 | DT | C | 04 | TR | ME | 270 | 20 | BILL 5 | B05 | S2 | 2F | R00 | ACF04 | 270 |  |  | MEP |  |  |  | 2n | E |  |  |
| D04TR09501C0 |  | DT-04 ; Ceiling Grid and Service Tile (TR RM) | 18d | 2012-01-21 | 2012-02-11 | D04TR09205C0 SS+15d, D04TR09901C0 |  |  |  |  | 25d | 0d | CEILING GRID FOR GYPSUM [63.31 h]; Cost |  |  | D04TR09501C0 | DT | C | 04 | TR | CE | 095 | 01 | BILL 5 | B05 | S2 | 01 | R00 | ACF06 | 095 | 336 | 1327 |  |  |  |  |  |  |  | 1 |
| D04TR09903C0 |  | DT-04 ; Wall - Final Paint (TR RM) | 11.88d | 2012-01-21 | 2012-02-02 | D04TR09901C0 |  |  |  |  | 115.12d | 90.12d | WALL PAINT [42 h]; WALL PAINT [51 m2]; Cost |  |  | D04TR09903C0 | DT | C | 04 | TR | PA | 099 | 03 | BILL 5 | B05 | S2 | 02 | R00 | ACF06 | 099 | 361 | 1312 |  |  |  |  |  |  |  |  |
| D04TR23013C0 |  | DT-04 ; 2nd Fix, Insulation of CHW pipe & Duct (TR RM) | 30d | 2012-02-05 | 2012-03-10 | D04TR23009C0, D04TR23011C0 |  |  |  |  | 25d | 0d | MECHANICAL [5311.2 h]; Cost |  |  | D04TR23013C0 | DT | C | 04 | TR | ME | 230 | 13 | BILL 5 | B05 | S2 | 2F | R00 | ACF07 | 230 |  |  | MEP |  |  |  | 2n |  |  |  |
| D04TR27030C0 |  | DT-04 ; Final Fix, Inst of ELV device (Detector/Speaker) (TR RM) | 24d | 2012-02-05 | 2012-03-03 | D04TR27002C0 |  |  |  |  | 31d | 6d | ELECTRICAL [2152.8 h]; Cost |  |  | D04TR27030C0 | DT | C | 04 | TR | ME | 270 | 30 | BILL 5 | B05 | S2 | FF | R00 | ACF07 | 270 |  |  | MEP |  |  |  | FF |  |  |  |
| D04TR26013C0 |  | DT-04 ; Final Fix, Termination & Gladding of Cables (TR RM) | 24d | 2012-02-11 | 2012-03-08 | D04TR26009C0 |  |  |  |  | 26d | 1d | ELECTRICAL [368.4 h]; Cost |  |  | D04TR26013C0 | DT | C | 04 | TR | ME | 260 | 13 | BILL 5 | B05 | S2 | FF | R00 | ACF07 | 260 |  |  | MEP |  |  |  | FF |  |  |  |
| D04TR09601C0 |  | DT-04 ; Floor Finishes (TR RM) | 18d | 2012-02-12 | 2012-03-03 | D04TR09501C0 |  |  |  |  | 25d | 0d | ASSORTED FLOOR FINISH [1616 h]; ASSORTED FLOOR FINISH [894 m2]; Cost |  |  | D04TR09601C0 | DT | C | 04 | TR | FF | 096 | 01 | BILL 5 | B05 | S2 | 01 | R00 | ACF06 | FF | 359 | 20001120 |  |  |  |  |  |  |  |  |
| D04TR09905C0 |  | DT-04 ; Ceiling Prime & 1st coat (TR RM) | 21d | 2012-02-12 | 2012-03-06 | D04TR09501C0 |  |  |  |  | 70d | 33d | ASSORTED CEILING FINISH [148 h]; Cost |  |  | D04TR09905C0 | DT | C | 04 | TR | PA | 099 | 05 | BILL 5 | B05 | S2 | 01 | R00 | ACF06 | 099 | 362 | 1313 |  |  |  |  |  |  |  |  |
| D04TR23003C0 |  | DT-04 ; Final Fix, Inst of Grilles & Diffusers (TR RM) | 24d | 2012-02-12 | 2012-03-10 | D04TR09501C0 |  |  |  |  | 25d | 0d | MECHANICAL [2560.8 h]; Cost |  |  | D04TR23003C0 | DT | C | 04 | TR | ME | 230 | 03 | BILL 5 | B05 | S2 | FF | R00 | ACF07 | 230 |  |  | MEP |  |  |  | FF |  |  |  |
| D04TR23023C0 |  | DT-04 ; 2nd Fix, Flexible ducts (TR RM) | 30d | 2012-02-12 | 2012-03-17 | D04TR09205C0, D04TR09501C0 |  |  |  |  | 31d | 6d | MECHANICAL [274.8 h]; Cost |  |  | D04TR23023C0 | DT | C | 04 | TR | ME | 230 | 23 | BILL 5 | B05 | S2 | 2F | R00 | ACF07 | 230 | 412 | 20001140 | MEP |  |  |  | 2n |  |  |  |
| D04TR23074C0 |  | DT-04 ; Final Fix, Grilles, panels & diffusers (TR RM) | 24d | 2012-02-12 | 2012-03-10 | D04TR09501C0 |  |  |  |  | 25d | 0d | MECHANICAL [2560.8 h]; Cost |  |  | D04TR23074C0 | DT | C | 04 | TR | ME | 230 | 74 | BILL 5 | B05 | S2 | FF | R00 | ACF07 | 230 | 419 | 20001160 | MEP |  |  |  | FF |  |  |  |
| D04TR26005C0 |  | DT-04 ; 2nd Fix, Wiring for Power/Lighting/Emergency (TR RM) | 30d | 2012-02-12 | 2012-03-17 | D04TR26026C0, D04TR09501C0 |  |  |  |  | 31d | 6d | ELECTRICAL [436.8 h]; Cost |  |  | D04TR26005C0 | DT | C | 04 | TR | ME | 260 | 05 | BILL 5 | B05 | S2 | 2F | R00 | ACF07 | 260 |  |  | MEP |  |  |  | 2n |  |  |  |
| D04TR26015C0 |  | DT-04 ; Final Fix, Inst of Ceiling rose (TR RM) | 24d | 2012-02-12 | 2012-03-10 | D04TR09501C0 |  |  |  |  | 25d | 0d | ELECTRICAL [67.2 h]; Cost |  |  | D04TR26015C0 | DT | C | 04 | TR | ME | 260 | 15 | BILL 5 | B05 | S2 | FF | R00 | ACF07 | 260 |  |  | MEP |  |  |  | FF |  |  |  |
| D04TR26019C0 |  | DT-04 ; Final Fix, Inst of Light fittings (TR RM) | 24d | 2012-02-12 | 2012-03-10 | D04TR09501C0 |  |  |  |  | 25d | 0d | ELECTRICAL [6626.4 h]; Cost |  |  | D04TR26019C0 | DT | C | 04 | TR | ME | 260 | 19 | BILL 5 | B05 | S2 | FF | R00 | ACF07 | 260 |  |  | MEP |  |  |  | FF |  |  |  |
| D04TR26076C0 |  | DT-04 ; Final Fix, Lighting fittings (TR RM) | 24d | 2012-02-12 | 2012-03-10 | D04TR09501C0 |  |  |  |  | 25d | 0d | ELECTRICAL [6626.4 h]; Cost |  |  | D04TR26076C0 | DT | C | 04 | TR | ME | 260 | 76 | BILL 5 | B05 | S2 | FF | R00 | ACF07 | 260 | 420 | 20001170 | MEP |  |  |  | FF |  |  |  |
| D04TR08105C0 |  | DT-04 ; Doors (TR RM) | 24d | 2012-03-04 | 2012-03-31 | D04TR08101C0, D04TR09901C0, D04TR09601C0 |  |  |  |  | 51.12d | 0d | ASSORTED DOORS [2130 h]; ASSORTED DOORS [213 no]; Cost |  |  | D04TR08105C0 | DT | C | 04 | TR | DO | 081 | 05 | BILL 5 | B05 | S2 | DR | R00 | ACF06 | 081 | 317 | 1325 |  |  |  |  |  |  | 08 |  |
| D04TR21115C0 |  | DT-04 ; 2nd Fix, Gaseous Fire Suppression (TR RM) | 18d | 2012-03-04 | 2012-03-24 | D04TR09601C0 |  |  |  |  | 25d | 0d | MECHANICAL [12560.4 h]; Cost |  |  | D04TR21115C0 | DT | C | 04 | TR | ME | 211 | 15 | BILL 5 | B05 | S2 | 2F | R00 | ACF07 | 211 | 411 | 20001130 | MEP |  |  |  | 2n |  |  |  |
| D04TR01006C0 |  | DT-04 ; 2nd, Ceiling Inspection by Consultants (TR RM) | 12d | 2012-03-11 | 2012-03-24 | D04TR23009C0, D04TR23011C0, D04TR23013C0, D04TR26007C0, D04TR09501C0, D04TR23003C0, D04TR23074C0, D04TR26015C0, D04TR26019C0, D04TR26076C0, D04TR27030C0, D04TR26013C0 |  |  |  |  | 25d | 0d | Labor General [1.2 h]; Cost |  |  | D04TR01006C0 | DT | C | 04 | TR | ME | 010 | 06 | BILL 5 | B05 | S2 | CI | R00 | ACF07 | 010 |  |  | MEP |  |  |  | 2n |  |  |  |
| D04TR09503C0 |  | DT-04 ; Ceiling closure (TR RM) | 18d | 2012-03-25 | 2012-04-14 | D04TR01006C0, D04TR21115C0, D04TR26005C0, D04TR26007C0, D04TR26026C0, D04TR26027C0, D04TR23023C0 |  |  |  |  | 25d | 0d | CEILING GYPSUM [4.1 h]; Cost |  |  | D04TR09503C0 | DT | C | 04 | TR | CE | 095 | 03 | BILL 5 | B05 | S2 | 02 | R00 | ACF06 | 095 | 337 | 20001080 |  |  |  |  |  |  |  |  |
| D04TR08709C0 |  | DT-04 ; Ironmongery (TR RM) | 15.88d | 2012-04-01 | 2012-04-18 | D04TR08105C0 |  |  |  |  | 51.12d | 26.12d | IRONMONGERY [50 h]; IRONMONGERY [5 no]; Cost |  |  | D04TR08709C0 | DT | C | 04 | TR | DO | 087 | 09 | BILL 5 | B05 | S2 | IM | R00 | ACF06 | 087 | 322 | 20001100 |  |  |  |  |  |  | 08 |  |
| D04TR09907C0 |  | DT-04 ; Ceiling - Final paint (TR RM) | 18d | 2012-04-15 | 2012-05-05 | D04TR09905C0, D04TR09503C0 |  |  |  |  | 37d | 12d | ASSORTED CEILING FINISH [79 h]; Cost |  |  | D04TR09907C0 | DT | C | 04 | TR | PA | 099 | 07 | BILL 5 | B05 | S2 | 02 | R00 | ACF06 | 099 | 363 | 1314 |  |  |  |  |  |  |  |  |
| D04TR26017C0 |  | DT-04 ; Final Fix, Inst of Switch/Sockets (TR RM) | 12d | 2012-04-15 | 2012-04-28 | D04TR09901C0, D04TR09503C0 |  |  |  |  | 25d | 0d | ELECTRICAL [610.8 h]; Cost |  |  | D04TR26017C0 | DT | C | 04 | TR | ME | 260 | 17 | BILL 5 | B05 | S2 | FF | R00 | ACF07 | 260 |  |  | MEP |  |  |  | FF |  |  |  |
| D04TR01802C0 |  | DT-04 ; MEP de-snag, FIREM sign-off | 18d | 2012-04-29 | 2012-05-19 | D04TR27030C0, D04TR23074C0, D04TR26076C0, D04TR26013C0, D04TR26019C0, D04TR26017C0, D04TR23003C0, D04TR26015C0 |  |  |  |  | 25d | 0d | TESTING & COMMISSIONING [510 h]; Cost |  |  | CP3TR01851C0 | DT | C | 04 | TR | SC | 018 | 53 | BILL 5 | B05 | S2 | 01 | R00 | ACF07 | 018 | 396 |  |  |  |  |  |  |  |  |  |
| D04TR01801C0 |  | DT-04 ; Touch-up & Clean / JV inspection /CIR /De-snag | 24d | 2012-05-20 | 2012-06-17 | D04TR01802C0, D04TR08709C0, D04TR09601C0, D04TR09903C0, D04TR09907C0, D04TR09503C0 |  |  |  |  | 25d | 0d | TESTING & COMMISSIONING [85 h]; Cost |  |  | D04TR01851C0 | DT | C | 04 | TR | SC | 018 | 51 | BILL 5 | B05 | S2 | 02 | R00 | ACF07 | 018 | 396 |  |  |  |  |  |  |  |  |  |
| D04TR01803C0 |  | DT-04 ; Consultant's final de-snag inspection | 12d | 2012-06-18 | 2012-07-01 | D04TR01801C0 |  |  |  |  | 25d | 13.2d | Labor General [1 h]; Cost |  |  | CP3TS01803C0 | DT | C | 04 | TR | SC | 018 | 03 | BILL 5 | B05 | S1 | 03 | R00 | ACF07 | 018 |  |  |  |  |  |  |  |  |  |  |

| ID | WBS | Activity | Duration | Start | Finish | Predecessors | Complete | Remaining | Planned start | Planned finish | Total float | Free float | Constraint | Resources | change id | RENZ % COMPLETE | Phase | CCAD BUILDING(SET) | CCAD PHASE(SET) | CCAD FLOOR(SET) | CCAD ZONE(SET) | CCAD WORK(SET) | CCAD SECTION(SET) | CCAD SERIAL No.(SET) | Area/ Department | Grids | Are | Weight & Nos | Process | Levels | CCAD CBS(SET) | CCAD BILL(SET) | CCAD HANDOVER(SET) | CCAD TAG(SET) | CCAD REV(SET) | CCADACF (SET) | CCAD CSA | CCAD SSCF | Change Order # | NEW ACTIVITY ID | CCAD DIVISION(SET) | user_text2 |
| --- | --- | --- | --- | --- | --- | --- | --- | --- | --- | --- | --- | --- | --- | --- | --- | --- | --- | --- | --- | --- | --- | --- | --- | --- | --- | --- | --- | --- | --- | --- | --- | --- | --- | --- | --- | --- | --- | --- | --- | --- | --- | --- |
|  | R5 | **Level 5 Roof** |  | 2011-01-18 | 2012-10-06 |  |  |  |  |  |  |  |  |  |  |  |  |  |  |  |  |  |  |  |  |  |  |  |  |  |  |  |  |  |  |  |  |  |  |  |  |  |
|  | 01 | **Structure & Envelopment** |  | 2011-01-18 | 2012-04-25 |  |  |  |  |  |  |  |  |  |  |  |  |  |  |  |  |  |  |  |  |  |  |  |  |  |  |  |  |  |  |  |  |  |  |  |  |  |
| DR5S105305C0 |  | DT-R5 ; Metal Decking 5th FLR (Zone S1) | 15d | 2011-01-18 A | 2011-03-15 A | DR5S105103C0 | 100% |  | 2011-01-16 | 2011-02-02 |  |  |  | METAL DECKING [2310 h]; METAL DECKING [2923 m2]; Cost | DR5S105305C0 | 100 | Z2 | DT | C | R5 | S1 | ST | 053 | 05 | DT | P03 | O | A3 | MDEC | 1FLR | BILL 5 | B05 | S2 | 03 | R00 | ACF03 | ST | 053 |  |  |  |  |
| DR5S205305C0 |  | DT-R5 ; Metal Decking 5th FLR (Zone S2) | 19d | 2011-01-19 A | 2011-03-15 A | DR5S205103C0 | 100% |  | 2011-02-02 | 2011-02-24 |  |  |  | METAL DECKING [2868 h]; METAL DECKING [3630 m2]; Cost | DR5S205305C0 | 100 | Z2 | DT | C | R5 | S2 | ST | 053 | 05 | DT | P03 | O | A3 | MDEC | 1FLR | BILL 5 | B05 | S2 | 03 | R00 | ACF03 | ST | 053 |  |  |  |  |
| DR5S305305C0 |  | DT-R5 ; Metal Decking 5th FLR (Zone S3) | 20d | 2011-01-25 A | 2011-04-10 A | DR5S205305C0, DR5S305103C0 | 100% |  | 2011-03-05 | 2011-03-28 |  |  |  | METAL DECKING [3160 h]; METAL DECKING [3999 m2]; Cost | DR5S305305C0 | 100 | Z2 | DT | C | R5 | S3 | ST | 053 | 05 | DT | P03 | O | A3 | MDEC | 1FLR | BILL 5 | B05 | S2 | 03 | R00 | ACF03 | ST | 053 |  |  |  |  |
| DR5S103399C0 |  | DT-R5 ; Concrete on Metal Decking 5th FLR (Zone S1) | 10d | 2011-02-15 A | 2011-04-27 A | DR5S105305C0 | 100% |  | 2011-02-22 | 2011-03-06 |  |  |  | CONCRETE [14320 h]; CONCRETE [360 m3]; Cost | DR5S105335C0 | 100 | Z2 | DT | C | R5 | S1 | CT | 033 | 99 | DT | P03 | O | A3 | MDEC | 1FLR | BILL 5 | B05 | S2 | 08 | R00 | ACF03 |  | 033 |  |  |  |  |
| DR5S203399C0 |  | DT-R5 ; Concrete on Metal Decking 5th FLR (Zone S2) | 10d | 2011-02-15 A | 2011-04-28 A | DR5S205305C0 | 100% |  | 2011-03-05 | 2011-03-16 |  |  |  | CONCRETE [21384 h]; CONCRETE [538 m3]; Cost | DR5S205335C0 | 100 | Z2 | DT | C | R5 | S2 | CT | 033 | 99 | DT | P03 | O | A3 | MDEC | 1FLR | BILL 5 | B05 | S2 | 08 | R00 | ACF03 |  | 033 |  |  |  |  |
| DR5S303399C0 |  | DT-R5 ; Concrete on Metal Decking 5th FLR (Zone S3) | 10d | 2011-03-03 A | 2011-04-30 A | DR5S305305C0, DR5S103399C0 FF | 100% |  | 2011-03-28 | 2011-04-09 |  |  |  | CONCRETE [23496 h]; CONCRETE [591 m3]; Cost | DR5S305335C0 | 100 | Z2 | DT | C | R5 | S3 | CT | 033 | 99 | DT | P03 | O | A3 | MDEC | 1FLR | BILL 5 | B05 | S2 | 08 | R00 | ACF03 |  | 033 |  |  |  |  |
| DR5S105101C0 |  | DT-R5 ; Erection of Structural Steel for Parapet(S1) (Zone S1) | 7.4d | 2011-03-23 A | 2011-03-30 A | D04S105103C0 | 100% |  | 2011-02-28 | 2011-03-08 |  |  |  | STRUCTURAL STEEL [999 h]; STRUCTURAL STEEL [39 T(Fe)]; Cost | DR5S105101C0 | 100 | Z2 | DT | C | R5 | S1 | ST | 051 | 01 | DT | P03 | O | A3 | EREC | 1FLR | BILL 5 | B05 | S2 | 01 | R00 | ACF03 | ST | 051 |  |  |  |  |
| DR5S205101C0 |  | DT-R5 ; Erection of Structural Steel for Parapet(S3) (Zone S2) | 10d | 2011-03-23 A | 2011-03-30 A | D04S205103C0 | 100% |  | 2011-03-03 | 2011-03-15 |  |  |  | STRUCTURAL STEEL [999 h]; STRUCTURAL STEEL [39 T(Fe)]; Cost | DR5S205101C0 | 100 | Z2 | DT | C | R5 | S2 | ST | 051 | 01 | DT | P03 | O | A3 | EREC | 1FLR | BILL 5 | B05 | S2 | 01 | R00 | ACF03 | ST | 051 |  |  |  |  |
| DR5S305101C0 |  | DT-R5 ; Erection of Structural Steel for Parapet(S3) (Zone S3) | 9.25d | 2011-03-23 A | 2011-03-31 A | D04S305103C0 | 100% |  | 2011-03-06 | 2011-03-16 |  |  |  | STRUCTURAL STEEL [999 h]; STRUCTURAL STEEL [39 T(Fe)]; Cost | DR5S305101C0 | 100 | Z2 | DT | C | R5 | S3 | ST | 051 | 01 | DT | P03 | O | A3 | EREC | 1FLR | BILL 5 | B05 | S2 | 01 | R00 | ACF03 | ST | 051 |  |  |  |  |
| DR5S105103C0 |  | DT-R5 ; Alignment & welding for Parapet(S1) (Zone S1) | 4d | 2011-03-26 A | 2011-03-31 A | DR5S105101C0 SS+7d | 100% |  | 2011-03-08 | 2011-03-13 |  |  |  | STRUCTURAL STEEL [192 h]; Cost | DR5S105103C0 | 100 | Z2 | DT | C | R5 | S1 | ST | 051 | 03 | DT | P03 | O | A3 | EREC | 1FLR | BILL 5 | B05 | S2 | 02 | R00 | ACF03 | ST | 051 |  |  |  |  |
| DR5S205103C0 |  | DT-R5 ; Alignment & welding for Parapet (Zone S2) | 6d | 2011-03-26 A | 2011-03-31 A | DR5S205101C0 | 100% |  | 2011-03-15 | 2011-03-22 |  |  |  | STRUCTURAL STEEL [238 h]; Cost | DR5S205103C0 | 100 | Z2 | DT | C | R5 | S2 | ST | 051 | 03 | DT | P03 | O | A3 | EREC | 1FLR | BILL 5 | B05 | S2 | 02 | R00 | ACF03 | ST | 051 |  |  |  |  |
| DR5S305103C0 |  | DT-R5 ; Alignment & welding for Parapet (Zone S3) | 5d | 2011-03-26 A | 2011-03-31 A | DR5S305101C0 | 100% |  | 2011-03-17 | 2011-03-23 |  |  |  | STRUCTURAL STEEL [262 h]; Cost | DR5S305103C0 | 100 | Z2 | DT | C | R5 | S3 | ST | 051 | 03 | DT | P03 | O | A3 | EREC | 1FLR | BILL 5 | B05 | S2 | 02 | R00 | ACF03 | ST | 051 |  |  |  |  |
| DR5CO04443C0 |  | DT-R5 ; M2 Bracket (Common Zone) | 24d | 2011-09-05 A | 2011-10-13 | DR5S103399C0, DR5S203399C0, DR5S303399C0 | 50% | 12d | 2011-09-01 | 2011-09-28 | 200.4d | 0d |  | FACADE METAL PANEL 2 [946.2 h]; Cost | DR5CO04443C0 |  |  | DT | C | R5 | CO | FA | 044 | 43 |  |  |  |  |  |  | BILL 5 | B05 | S2 | FM2 | R00 | ACF05 | FA | 044 |  |  |  |  |
| DR5CO04445C0 |  | DT-R5 ; M2 Transom & Mullion (Common Zone) | 36d | 2011-09-05 A | 2011-11-12 | DR5CO04443C0 | 40% | 21.6d | 2011-09-29 | 2011-11-13 | 200.4d | 0d |  | FACADE METAL PANEL 2 [3785 h]; Cost | DR5CO04445C0 |  |  | DT | C | R5 | CO | FA | 044 | 45 |  |  |  |  |  |  | BILL 5 | B05 | S2 | FM2 | R00 | ACF05 | FA | 044 |  |  |  |  |
| DR5CO04447C0 |  | DT-R5 ; M2 Metal Panel (Common Zone) | 50d | 2011-11-12 | 2012-01-12 | DR5CO04445C0 |  |  |  |  | 200.4d | 0d |  | FACADE METAL PANEL 2 [2180.4 h]; FACADE METAL PANEL 2 [797 m2]; FACADE TOTAL QUANTITY m2 [797 m2]; Cost | DR5CO04447C0 |  |  | DT | C | R5 | CO | FA | 044 | 47 |  |  |  |  |  |  | BILL 5 | B05 | S2 | FM2 | R00 | ACF05 | FA | 044 |  |  |  |  |
| DR5CO04433C0 |  | DT-R5 ; SK-3 Steel Structure for Skylight (Common Zone) | 18d | 2012-01-02 | 2012-01-22 | DR5S103399C0 FS+28d, DR5S203399C0 FS+28d, DR5S303399C0 FS+165d |  |  |  |  | 63d | 0d | start on or after 2012-01-02 | FACADE STEEL GRILL [13390.7 h]; Cost | DR5CO04423C0 |  |  | DT | C | R5 | CO | FA | 044 | 23 |  |  |  |  |  |  | BILL 5 | B05 | S2 | FSY | R00 | ACF05 | FA | 044 |  |  |  |  |
| DR5CO04423C0 |  | DT-R5 ; SK-3 Skylight Bracket & transom installation (Common Zone) | 42d | 2012-01-23 | 2012-03-12 | DR5LS03301C0, DR5CO04433C0 |  |  |  |  | 63d | 0d |  | FACADE SKYLIGHT GLASS [4017.1 h]; Cost | DR5CO04423C0 |  |  | DT | C | R5 | CO | FA | 044 | 23 |  |  |  |  |  |  | BILL 5 | B05 | S2 | FSY | R00 | ACF05 | FA | 044 |  |  |  |  |
| DR5CO04405C0 |  | DT-R5 ; SK-3 Skylight Glass installation (Common Zone) | 46d | 2012-02-07 | 2012-03-31 | DR5CO04423C0 SS+12d, DR5CO04423C0 FF |  |  |  |  | 63d | 0d |  | FACADE SKYLIGHT GLASS [2400 h]; FACADE SKYLIGHT GLASS [877 m2]; FACADE TOTAL QUANTITY m2 [877 m2]; Cost | DR5CO04405C0 |  |  | DT | C | R5 | CO | FA | 044 | 05 |  |  |  |  |  |  | BILL 5 | B05 | S2 | FSY | R00 | ACF05 | FA | 044 |  |  |  |  |
| DR5CO04411C0 |  | DT-R5 ; SG Catwalk Installation (Common Zone) | 48d | 2012-02-29 | 2012-04-25 | DR5CO04447C0 SS, D04CO04422C0 SS |  |  |  |  | 208.62d | 112.62d |  | Labor General [4953.9 h]; Cost | I05CO04411C0 |  |  | DT | C | 05 | CO | FA | 044 | 11 |  |  |  |  |  |  | BILL 5 | B05 | S2 | SG | R00 | ACF05 | FA | 044 |  |  |  |  |
|  | 09 | **Roof** |  |  |  |  |  |  |  |  |  |  |  |  |  |  |  |  |  |  |  |  |  |  |  |  |  |  |  |  |  |  |  |  |  |  |  |  |  |  |  |  |
|  | 10 | **Landscaping** |  | 2011-10-01 | 2012-09-06 |  |  |  |  |  |  |  |  |  |  |  |  |  |  |  |  |  |  |  |  |  |  |  |  |  |  |  |  |  |  |  |  |  |  |  |  |  |
| DR5LS03301C0 |  | DT-R5 ; Features Concrete (Landscaping) | 18d | 2011-10-01 | 2011-10-20 | DR5S103399C0, DR5S203399C0, DR5S303399C0 |  |  |  |  | 137d | 0d |  | CONCRETE [13560 h]; CONCRETE [341 m3]; Cost | DR5LS03301C0 |  |  | DT | C | R5 | LS | CT | 033 | 01 |  |  |  |  |  |  | BILL 5 | B12 | S2 | 10 | R00 | ACF03 |  | 033 | 302 | 335 | 03 |  |
| DR5LS07101C0 |  | DT-R5 ; Water Proofing (Landscaping) | 32d | 2011-10-22 | 2011-12-01 | DR5LS03301C0 |  |  |  |  | 190d | 0d |  | THERMAL & MOISTURE [4 h]; Cost | DR5LS07101C0 |  |  | DT | C | R5 | LS | FF | 071 | 01 |  |  |  |  |  |  | BILL 5 | B05 | S2 | 01 | R00 | ACF03 |  | 071 | 302 | 335 | 03 |  |
| DR5LS05301C0 |  | DT-R5 ; Steel Bracket for Corten (Landscaping) | 32d | 2011-12-04 | 2012-01-10 | DR5LS07101C0 |  |  |  |  | 190d | 0d |  | SECONDARY STEEL [3831 h]; Cost | DR5LS05301C0 |  |  | DT | C | R5 | LS | SW | 053 | 01 |  |  |  |  |  |  | BILL 5 | B12 | S2 | 06 | R00 | ACF03 | MEP | 053 | 302 | 335 | 03 |  |
| DR5LS32113C0 |  | DT-R5 ; Irrigation - pipes & fittings (Landscaping) | 18d | 2011-12-04 | 2011-12-24 | DR5LS07101C0 |  |  |  |  | 300d | 0d |  | Labor General [1 h]; Cost | CR5LS32113C0 |  |  | DT | C | R5 | LS | LN | 321 | 13 |  |  |  |  |  |  | BILL 12 | B12 | S2 | 05 | R00 | ACF09 |  | 328 | 1087 | 202 |  |  |
| DR5LS10201C0 |  | DT-R5 ; Corten (Landscaping) | 32d | 2011-12-11 | 2012-01-17 | DR5LS07101C0, DR5LS05301C0 SS+6d |  |  |  |  | 196d | 6d |  | LANDSCAPING [945 h]; Cost | DR5LS10201C0 |  |  | DT | C | R5 | LS | LN | 102 | 01 |  |  |  |  |  |  | BILL 12 | B12 | S2 | 03 | R00 | ACF09 |  | 102 | 302 | 335 | 03 |  |
| DR5LS32105C0 |  | DT-R5 ; Storm drainage utilities (Landscaping) | 12d | 2012-01-11 | 2012-01-24 | DR5LS05301C0 |  |  |  |  | 190d | 0d |  | LANDSCAPING [26 h]; Cost | CR5LS32105C0 |  |  | DT | C | R5 | LS | LN | 321 | 05 |  |  |  |  |  |  | BILL 12 | B12 | S2 | 05 | R00 | ACF09 |  | 328 | 1081 | 196 |  |  |
| DR5LS32901C10 |  | DT-R5 ; Planting Media (Landscaping) | 18d | 2012-01-25 | 2012-02-15 | DR5LS10201C0, DR5LS32105C0 |  |  |  |  | 190d | 28d |  | LANDSCAPING [1810 h]; Cost | DR5LS32901C0 |  |  | DT | C | R5 | LS | LN | 329 | 01 |  |  |  |  |  |  | BILL 12 | B12 | S2 | 06 | R00 | ACF09 |  | 329 | 302 | 335 | 03 |  |
| DR5RF07101C0 |  | DT-R5 ; Water Proofing - Leave out (Roof) | 18d | 2012-02-28 | 2012-03-20 | DR5CO04445C0, DR5CO04447C0, DR5LS03301C0, DR5S103399C0, DR5S203399C0, DR5S303399C0, DP3CO04417C0, DP1CO04417C0, D01CO04407C0, D02CO04417C0, D03CO04417C0, D04CO04417C0, D04CO04429C0, D04CO04447C0 |  |  |  |  | 162d | 0d |  | THERMAL & MOISTURE [4 h]; Cost | DR5RF07101C0 |  |  | DT | C | R5 | RF | FF | 071 | 01 |  |  |  |  |  |  | BILL 5 | B05 | S2 | 01 | R00 | ACF03 |  | 071 | 302 | 335 | 03 |  |
| DR5RF09601C0 |  | DT-R5 ; Paving / Surfacing (Roof) | 48d | 2012-03-20 | 2012-05-15 | DR5LS32901C10, DR5RF07101C0 |  |  |  |  | 162d | 0d |  | ASSORTED FLOOR FINISH [2200 h]; Cost | DR5RF09601C0 |  |  | DT | C | R5 | RF | FF | 096 | 01 |  |  |  |  |  |  | BILL 5 | B12 | S2 | 02 | R00 | ACF06 |  | PV | 302 | 335 | 03 |  |
| CR5RF09601C20 |  | DT-R5 ; Wooden Deck (Landscaping) | 0d | 2012-05-15 | 2012-05-15 | DR5RF09601C0 |  |  |  |  | 162d | 0d |  | Cost | CR5RF09601C0 |  |  | DT | C | R5 | RF | FF | 096 | 01 |  |  |  |  |  |  | BILL 5 | B12 | S1 | 02 | R00 | ACF06 |  | WD | 302 | 335 | 60 |  |
| DR5LS11001C0 |  | DT-R5 ; SIte Furniture's (Landscaping) | 18d | 2012-05-15 | 2012-06-05 | CR5RF09601C20 |  |  |  |  | 162d | 66d |  | FF&E [69 h]; FF&E [22.85 no]; Cost | DR5LS11001C0 |  |  | DT | C | R5 | LS | LN | 110 | 01 |  |  |  |  |  |  | BILL 12 | B12 | S2 | 04 | R00 | ACF10 |  | f | 302 | 335 | 03 |  |
| DR5LS32901C0 |  | DT-R5 ; Plant / Planting (Landscaping) | 12d | 2012-08-25 | 2012-09-06 | LP31L07104R82 |  |  |  |  | 96d | 0d |  | LANDSCAPING [1810 h]; Cost | DR5LS32901C0 |  |  | DT | C | R5 | LS | LN | 329 | 01 |  |  |  |  |  |  | BILL 12 | B12 | S2 | 06 | R00 | ACF09 |  | 329 | 302 | 335 | 03 |  |
| LP31L07104R82 |  | DT-R5 ; Leave-out surface and paving (Landscaping) | 0d | 2012-08-25 | 2012-08-25 | TEXCO04413C0 FS+12d, DR5LS32113C0, DR5LS11001C0 |  |  |  |  | 96d | 0d |  | Cost |  |  |  | DT |  |  |  | XW | 312 |  |  |  |  |  |  |  |  | B12 |  |  | R00 |  |  | 312 |  |  |  | new |

| ID | WBS | Activity | Duration | Start | Finish | Predecessors | Complete | Remaining | Planned start | Planned finish | Total float | Free float | Resources | Cost | Actual cost | Change Order # | NEW ACTIVITY ID | change id | RENZ % COMPLETE | CCAD BUILDING(SET) | CCAD PHASE(SET) | CCAD DIVISION(SET) | CCAD FLOOR(SET) | CCAD ZONE(SET) | CCAD WORK(SET) | CCAD SECTION(SET) | CCAD SERIAL No.(SET) | CCAD CBS(SET) | CCAD BILL(SET) | CCAD HANDOVER(SET) | CCAD TAG(SET) | CCAD REV(SET) | CCADACF (SET) | CCAD SSCF | P_811 | P_711 | CCAD CSA | Claimed This Month | CCAD SUB ZONE MEP(SET) | July2011 Target% Complete | user_number8 | user_integer1 | user_integer2 | user_number7 | PERCENT COMPLETE |
| --- | --- | --- | --- | --- | --- | --- | --- | --- | --- | --- | --- | --- | --- | --- | --- | --- | --- | --- | --- | --- | --- | --- | --- | --- | --- | --- | --- | --- | --- | --- | --- | --- | --- | --- | --- | --- | --- | --- | --- | --- | --- | --- | --- | --- | --- |
|  | 11 | **BMU** |  | 2011-05-09 | 2011-10-02 |  |  |  |  |  |  |  |  |  |  |  |  |  |  |  |  |  |  |  |  |  |  |  |  |  |  |  |  |  |  |  |  |  |  |  |  |  |  |  |  |
| DR5BM03301C0 |  | DT-R5 ; Concrete Plinth (BMU-A4-1,2) | 18d | 2011-05-09 A | 2011-05-31 A | DR5S103399C0, DR5S203399C0, DR5S303399C0 | 100% |  | 2011-05-31 | 2011-06-20 |  |  | CONCRETE [19000 h]; CONCRETE [478 m3]; Cost |  |  | 302 | 335 | DR5BM03301C0 | 100 | DT | C | 03 | R5 | BM | CT | 033 | 01 | BILL 5 | B05 | S2 | 10 | R00 | ACF03 | 033 |  |  |  |  |  |  |  |  |  |  |  |
| DR5BM05501C0 |  | DT-R5 ; Steel Tracking (BMU-A4-1,2) | 56d | 2011-07-31 A | 2011-09-29 A | DR5BM03301C0, OGNMU00053S0 | 100% |  | 2011-07-31 | 2011-10-05 |  |  | SECONDARY STEEL [1205 h]; Cost |  |  | 302 | 335 | DR5BM05501C0 |  | DT | C | 03 | R5 | BM | BMU | 055 | 01 | BILL 5 | B05 | S2 | BMU | R00 | ACF03 | BMU | 90 | 0 | BMU |  |  |  |  |  |  |  |  |
| DR5BM11001C0 |  | DT-R5 ; BMU Machine (BMU-A4-1,2) | 30d | 2011-08-03 A | 2011-10-02 | DR5BM05501C0 | 95% | 1.5d | 2012-01-25 | 2012-03-01 | 366.5d | 66.5d | FF&E [1008 h]; FF&E [336.06 no]; MECHANICAL [14931 h]; Cost |  |  | 302 | 335 | DR5BM11001C0 |  | DT | C | 03 | R5 | BM | BMU | 110 | 01 | BILL 5 | B05 | S2 | BMU | R00 |  | BMU | 95 | 0 | BMU |  |  |  |  |  |  |  |  |
|  | 1 | **Precommissioning Tesing & snagging** |  | 2011-12-25 | 2012-10-06 |  |  |  |  |  |  |  |  |  |  |  |  |  |  |  |  |  |  |  |  |  |  |  |  |  |  |  |  |  |  |  |  |  |  |  |  |  |  |  |  |
| DR5TS01801C0 |  | DT-R5 ; MEP de-snag, FIREM sign-off | 12d | 2011-12-25 | 2012-01-08 | DR5BM11001C0, DR5LS32113C0 |  |  |  |  | 300d | 204d | TESTING & COMMISSIONING [1530 h]; Cost |  |  |  |  | DR5TS01801C0 |  | DT | C |  | R5 | TS | SC | 018 | 01 | BILL 5 | B05 | S2 | 01 | R00 | ACF07 | 018 |  |  |  |  |  |  |  |  |  |  |  |
| DR5TS01802C0 |  | DT-R5 ; Touch-up & Clean / JV inspection /CIR /De-snag | 18d | 2012-09-08 | 2012-09-27 | DAFT1005509C0, DAFT105509C0, DAFT305509C0, DAFT505509C0, DAFT805509C0, DR5CO04405C0, DR5CO04447C0, DR5LS11001C0, DR5RF09601C0, DR5TS01801C0, DR5CO04411C0, DR5LS32901C0, D01CO04417C0, D03CO04429C0, D02CO04425C0, D03CO04430C0, D04CO04429C0, DR5RF07101C0 |  |  |  |  | 96d | 0d | TESTING & COMMISSIONING [255 h]; Cost |  |  |  |  | DR5TS01802C0 |  | DT | C |  | R5 | TS | SC | 018 | 02 | BILL 5 | B05 | S2 | 02 | R00 | ACF07 | 018 |  |  |  |  |  |  |  |  |  |  |  |
| DR5TS01803C0 |  | DT-R5 ; Consultant's final de-snag inspection | 7d | 2012-09-29 | 2012-10-06 | DR5TS01802C0 |  |  |  |  | 96d | 81.9d | Labor General [1 h]; Cost |  |  |  |  | DR5TS01803C0 |  | DT | C |  | R5 | TS | SC | 018 | 03 | BILL 5 | B05 | S2 | 03 | R00 | ACF07 | 018 |  |  |  |  |  |  |  |  |  |  |  |
|  | AF | **MEP Risers** |  | 2010-05-13 | 2012-05-03 |  |  |  |  |  |  |  |  |  |  |  |  |  |  |  |  |  |  |  |  |  |  |  |  |  |  |  |  |  |  |  |  |  |  |  |  |  |  |  |  |
|  | 02 | **MEP Risers** |  | 2010-05-13 | 2011-12-05 |  |  |  |  |  |  |  |  |  |  |  |  |  |  |  |  |  |  |  |  |  |  |  |  |  |  |  |  |  |  |  |  |  |  |  |  |  |  |  |  |
| DAFAF26043C0 |  | DT-AF ; Risers-Lightning protection cables (All Floor) | 72d | 2010-05-13 A | 2011-06-25 A | DR5S103399C0, DR5S203399C0, DR5S303399C0 | 100% |  | 2011-03-27 | 2011-06-19 |  |  | ELECTRICAL [34339.2 h]; Cost [1874730 AED] | 1,874,730 | 1,874,730 | 1131 | 1524 | DAFAF26043C0 | 70 | DT | C |  | AF | AF | ME | 260 | 43 | BILL 11 | B05 | S2 | MEL | R00 | ACF04 | 260 |  |  | MEP | 652543.9 | RI |  |  |  |  |  |  |
| DAFAF22017C0 |  | DT-AF ; Risers-Storm water drainage risers (All Floor) | 120d | 2011-03-07 A | 2011-11-03 | DAFAF22013C0 | 75% | 30d | 2011-04-07 | 2011-08-27 | 282d | 4d | PLUMBING [19840.8 h]; Cost [1024791 AED] | 1,024,791.27 | 768,593.45 | 1126 | 1519 | DAFAF22017C0 | 75 | DT | C |  | AF | AF | ME | 220 | 17 | BILL 11 | B05 | S2 | RI | R00 | ACF04 | 220 |  |  | MEP | 178266 | RI | 95 |  |  |  |  |  |
| DAFAF22013C0 |  | DT-AF ; Risers-Secondary Steel for Storm water drainage risers (All Floor) | 150d | 2011-03-13 A | 2011-10-01 | DR5S105101C0, DR5S205101C0, DR5S305101C0 | 100% | 0d | 2011-03-17 | 2011-09-12 | 282d | 0d | Cost [58896.1 AED] | 58,896.05 | 47,116.84 | 1126 | 228 | DAFAF22013C0 | 80 | DT | C |  | AF | AF | ME | 220 | 13 | BILL 11 | B05 | S2 | RI | R00 | ACF04 | 220 |  |  | MEP | 6830.1 | RI | 95 |  |  |  |  |  |
| DAFAF23027C0 |  | DT-AF ; Risers-Secondary Steel for Chilled water & heat recovery pip (All Floor) | 18d | 2011-03-13 A | 2011-04-24 A | DR5S105101C0, DR5S205101C0, DR5S305101C0 | 100% |  | 2011-03-17 | 2011-04-07 |  |  | Cost [1203582 AED] | 1,203,581.85 | 1,203,581.85 | 1128 | 230 | DAFAF23027C0 | 100 | DT | C |  | AF | AF | ME | 230 | 27 | BILL 11 | B05 | S2 | RI | R00 | ACF04 | 230 |  |  | MEP |  | RI |  |  |  |  |  |  |
| DAFAF26033C0 |  | DT-AF ; Risers-Tray for High voltage cables (All Floor) | 250d | 2011-03-13 A | 2011-10-15 | DR5S105101C0, DR5S205101C0, DR5S305101C0 | 95% | 12.5d | 2011-03-17 | 2012-01-14 | 31d | 0d | ELECTRICAL [4218 h]; Cost [335515 AED] | 335,514.65 | 318,738.92 | 1129 | 231 | DAFAF26033C0 | 85 | DT | C |  | AF | AF | ME | 260 | 33 | BILL 11 | B05 | S2 | MEL | R00 | ACF04 | 260 | 95 | 90 | MEP | 38913.9 | RI | 95 |  |  |  |  |  |
| DAFAF22009C0 |  | DT-AF ; Risers-Secondary Steel for Medical Gas/air/vacuum risers (All Floor) | 18d | 2011-04-04 A | 2011-07-31 A | DR5S105101C0, DR5S205101C0, DR5S305101C0 | 100% |  | 2011-03-17 | 2011-04-07 |  |  | Cost [134126 AED] | 134,125.6 | 134,125.6 | 1124 | 226 | DAFAF22009C0 | 70 | DT | C |  | AF | AF | ME | 220 | 09 | BILL 11 | B05 | S2 | RI | R00 | ACF04 | 220 |  |  | MEP |  | RI | 95 |  |  |  |  |  |
| DAFAF21101C0 |  | DT-AF ; Risers-Secondary Steel for fire Suppression (All Floor) | 18d | 2011-04-14 A | 2011-07-31 A | DR5S105101C0, DR5S205101C0, DR5S305101C0 | 100% |  | 2011-03-17 | 2011-04-07 |  |  | Cost [138703 AED] | 138,703.4 | 138,703.4 | 1121 | 223 | DAFAF21101C0 | 60 | DT | C |  | AF | AF | ME | 211 | 01 | BILL 11 | B05 | S2 | RI | R00 | ACF04 | 211 |  |  | MEP | 48266.7 | RI | 95 |  |  |  |  |  |
| DAFAF22005C0 |  | DT-AF ; Risers-Secondary Steel for Domestic cold water risers (All Floor) | 18d | 2011-04-14 A | 2011-07-31 A | DR5S105101C0, DR5S205101C0, DR5S305101C0 | 100% |  | 2011-03-17 | 2011-04-07 |  |  | Cost [44336.3 AED] | 44,336.3 | 44,336.3 | 1122 | 224 | DAFAF22005C0 | 60 | DT | C |  | AF | AF | ME | 220 | 05 | BILL 11 | B05 | S2 | RI | R00 | ACF04 | 220 |  |  | MEP | 5141.4 | RI | 95 |  |  |  |  |  |
| DAFAF22007C0 |  | DT-AF ; Risers-Secondary Steel for Hot water risers (All Floor) | 18d | 2011-04-14 A | 2011-07-31 A | DR5S105101C0, DR5S205101C0, DR5S305101C0 | 100% |  | 2011-03-17 | 2011-04-07 |  |  | Cost [28459.5 AED] | 28,459.45 | 28,459.45 | 1123 | 225 | DAFAF22007C0 | 60 | DT | C |  | AF | AF | ME | 220 | 07 | BILL 11 | B05 | S2 | RI | R00 | ACF04 | 220 |  |  | MEP |  | RI | 95 |  |  |  |  |  |
| DAFAF22011C0 |  | DT-AF ; Risers-Secondary Steel for Soil, waste & vent ris (All Floor) | 100d | 2011-04-14 A | 2011-10-01 | DR5S105101C0, DR5S205101C0, DR5S305101C0 | 100% | 0d | 2011-03-17 | 2011-07-13 | 282d | 0d | Cost [58782.7 AED] | 58,782.7 | 41,147.89 | 1125 | 227 | DAFAF22011C0 | 70 | DT | C |  | AF | AF | ME | 220 | 11 | BILL 11 | B05 | S2 | RI | R00 | ACF04 | 220 |  |  | MEP | 3407.4 | RI | 95 |  |  |  |  |  |
| DAFAF23025C0 |  | DT-AF ; Risers-Secondary Steel for Main Ducts (All Floor) | 18d | 2011-04-14 A | 2011-08-30 A | DR5S105101C0, DR5S205101C0, DR5S305101C0 | 100% |  | 2011-03-17 | 2011-04-07 |  |  | Cost [664384 AED] | 664,383.6 | 664,383.6 | 1127 | 229 | DAFAF23025C0 | 80 | DT | C |  | AF | AF | ME | 230 | 25 | BILL 11 | B05 | S2 | RI | R00 | ACF04 | 230 | 100 | 90 | MEP | 77038.6 | RI | 95 |  |  |  |  |  |
| DAFAF21103C0 |  | DT-AF ; Risers-Fire Suppression risers (All Floor) | 200d | 2011-04-17 A | 2011-10-23 | DAFAF21101C0 | 90% | 20d | 2011-04-07 | 2011-12-06 | 292d | 14d | MECHANICAL [46737.6 h]; Cost [2413439 AED] | 2,413,439.16 | 2,172,095.24 | 1121 | 1514 | DAFAF21103C0 | 70 | DT | C |  | AF | AF | ME | 211 | 03 | BILL 11 | B05 | S2 | RI | R00 | ACF04 | 211 |  |  | MEP | 279946.1 | RI | 95 |  |  |  |  |  |
| DAFAF23029C0 |  | DT-AF ; Risers-Chilled water & heat recovery pip (All Floor) | 250d | 2011-04-17 A | 2011-10-15 | DAFAF23027C0 | 95% | 12.5d | 2011-04-07 | 2012-02-05 | 299.5d | 21.5d | MECHANICAL [405601 h]; Cost [20942324 AED] | 20,942,324.19 | 19,895,207.98 | 1128 | 1521 | DAFAF23029C0 | 95 | DT | C |  | AF | AF | ME | 230 | 29 | BILL 11 | B05 | S2 | RI | R00 | ACF04 | 230 |  |  | MEP |  | RI | 95 | 0 | 0 | 0 | 0 |  |
| DAFAF26035C0 |  | DT-AF ; Risers-Tray for Low voltage cables (power, comm, (All Floor) | 200d | 2011-04-17 A | 2011-10-23 | DR5S105101C0, DR5S205101C0, DR5S305101C0 | 90% | 20d | 2011-03-17 | 2011-11-13 | 35.5d | 0d | ELECTRICAL [2460 h]; Cost [29175.2 AED] | 29,175.19 | 26,257.67 | 1130 | 232 | DAFAF26035C0 | 60 | DT | C |  | AF | AF | ME | 260 | 35 | BILL 11 | B05 | S2 | MEL | R00 | ACF04 | 260 | 90 | 75 | MEP | 11843.3 | RI | 95 |  |  |  |  |  |
| DAFAF26037C0 |  | DT-AF ; Risers-Tray for ELV risers (All Floor) | 90d | 2011-04-19 A | 2011-10-31 | DR5S105101C0, DR5S205101C0, DR5S305101C0 | 70% | 27d | 2011-03-17 | 2011-07-02 | 278d | 0d | ELECTRICAL [2778 h]; Cost [151598 AED] | 151,597.6 | 106,118.32 | 1132 | 233 | DAFAF26037C0 | 25 | DT | C |  | AF | AF | ME | 260 | 37 | BILL 11 | B05 | S2 | MEL | R00 | ACF04 | 260 | 50 | 30 | MEP | 35184.3 | RI | 50 | 0 | 0 | 0 | 0 |  |
| DAFAF22019C0 |  | DT-AF ; Risers-Domestic cold water risers (All Floor) | 150d | 2011-04-22 A | 2011-11-03 | DAFAF22005C0 | 80% | 30d | 2011-04-07 | 2011-10-03 | 282d | 4d | PLUMBING [14935.2 h]; Cost [771452 AED] | 771,451.62 | 617,161.3 | 1122 | 1515 | DAFAF22019C0 | 50 | DT | C |  | AF | AF | ME | 220 | 19 | BILL 11 | B05 | S2 | RI | R00 | ACF04 | 220 | 80 | 60 | MEP |  | RI | 70 | 0 | 0 | 0 | 0 | 80 |
| DAFAF22023C0 |  | DT-AF ; Risers-Soil, waste & vent risers (All Floor) | 120d | 2011-04-22 A | 2011-11-03 | DAFAF22011C0 | 75% | 30d | 2011-04-07 | 2011-08-27 | 282d | 4d | PLUMBING [19796.4 h]; Cost [1022819 AED] | 1,022,818.98 | 767,114.23 | 1125 | 1518 | DAFAF22023C0 | 60 | DT | C |  | AF | AF | ME | 220 | 23 | BILL 11 | B05 | S2 | RI | R00 | ACF04 | 220 | 75 | 60 | MEP | 237153.4 | RI | 85 |  |  |  |  |  |
| DAFAF23031C0 |  | DT-AF ; Risers-Risers - Main Ducts (All Floor) | 250d | 2011-04-22 A | 2011-10-15 | DAFAF23025C0 | 95% | 12.5d | 2011-04-07 | 2012-02-05 | 299.5d | 21.5d | MECHANICAL [223795 h]; Cost [11560275 AED] | 11,560,274.64 | 10,982,260.91 | 1127 | 1520 | DAFAF23031C0 | 80 | DT | C |  | AF | AF | ME | 230 | 31 | BILL 11 | B05 | S2 | RI | R00 | ACF04 | 230 |  |  | MEP | 670235.7 | RI | 85 |  |  |  |  |  |
| DAFAF22021C0 |  | DT-AF ; Risers-Hot water risers (All Floor) | 33d | 2011-05-15 A | 2011-11-03 | DAFAF22007C0 | 9% | 30d | 2011-06-08 | 2011-07-18 | 282d | 4d | PLUMBING [9582 h]; Cost [495194 AED] | 495,194.43 | 396,155.54 | 1123 | 1516 | DAFAF22021C0 | 20 | DT | C |  | AF | AF | ME | 220 | 21 | BILL 11 | B05 | S2 | RI | R00 | ACF04 | 220 | 80 | 75 | MEP |  | RI | 75 | 0 | 0 | 0 | 0 | 80 |
| DAFAF26045C0 |  | DT-AF ; Risers-Low voltage cables (power, comm, security) (All Floor) | 90d | 2011-06-22 A | 2011-12-05 | DAFAF26035C0 | 65% | 31.5d | 2011-08-02 | 2011-11-21 | 35.5d | 0d | ELECTRICAL [53404.8 h]; Cost [2916041 AED] | 2,916,041.2 | 1,895,426.78 | 1130 | 1523 | DAFAF26045C0 |  | DT | C |  | AF | AF | ME | 260 | 45 | BILL 11 | B05 | S2 | MEL | R00 | ACF04 | 260 | 65 | 60 | MEP |  | RI | 65 |  |  |  |  |  |
| DAFAF22015C0 |  | DT-AF ; Risers-Medical Gas/air/vacuum risers (All Floor) | 34d | 2011-07-10 A | 2011-11-03 | DAFAF22009C0 | 12% | 30d | 2011-07-06 | 2011-08-15 | 282d | 4d | PLUMBING [45193.2 h]; Cost [2333785 AED] | 2,333,785.44 | 1,867,028.35 | 1124 | 1517 | DAFAF22015C0 |  | DT | C |  | AF | AF | ME | 220 | 15 | BILL 11 | B05 | S2 | RI | R00 | ACF04 | 220 | 80 | 65 | MEP |  | RI | 75 | 0 | 0 | 0 | 0 | 80 |
| DAFAF26039C0 |  | DT-AF ; Risers-High voltage cables (All Floor) | 150d | 2011-07-10 A | 2011-10-23 | DAFAF26033C0 | 95% | 7.5d | 2011-07-12 | 2012-01-12 | 31d | 7d | ELECTRICAL [85754.4 h]; Cost [4681457 AED] | 4,681,456.8 | 4,447,383.96 | 1129 | 1522 | DAFAF26039C0 |  | DT | C |  | AF | AF | ME | 260 | 39 | BILL 11 | B05 | S2 | MEL | R00 | ACF04 | 260 | 80 | 45 | MEP | 2172667.95 | RI | 45 | 0 | 0 | 0 | 0 |  |
| DAFAF26041C0 |  | DT-AF ; Risers-ELV Cables (All Floor) | 34d | 2011-10-01 | 2011-11-12 | DAFAF21103C0 FF, DAFAF22015C0 FF, DAFAF22017C0 FF, DAFAF22019C0 FF, DAFAF22021C0 FF, DAFAF22023C0 FF, DAFAF23029C0 FF, DAFAF23031C0 FF, DAFAF26037C0 SS, DAFAF26043C0 FF |  |  |  |  | 278d | 17.5d | ELECTRICAL [10453.2 h]; Cost |  |  | 1132 | 1525 | DAFAF26041C0 |  | DT | C |  | AF | AF | ME | 260 | 41 | BILL 11 | B05 | S2 | MEL | R00 | ACF04 | 260 |  |  | MEP |  | RI | 45 |  |  |  |  |  |

| ID | WBS | Activity | Duration | Start | Finish | Predecessors | Total float | Free float | Constraint | Resources | change id | CCAD BUILDING(SET) | CCAD PHASE(SET) | CCAD FLOOR(SET) | CCAD ZONE(SET) | CCAD WORK(SET) | CCAD SECTION(SET) | CCAD SERIAL No.(SET) | CCAD CBS(SET) | CCAD BILL(SET) | CCAD HANDOVER(SET) | CCAD TAG(SET) | CCAD REV(SET) | CCADACF (SET) | CCAD SSCF | No.of Wor Days | Duration/Differe | CCAD CSA | user_end_date3 | user_end_date4 | NEW ACTIVITY ID | U% | user_text4 |
| --- | --- | --- | --- | --- | --- | --- | --- | --- | --- | --- | --- | --- | --- | --- | --- | --- | --- | --- | --- | --- | --- | --- | --- | --- | --- | --- | --- | --- | --- | --- | --- | --- | --- |
|  | 10 | **Precommissioning Tesing & snagging** |  | 2011-12-05 | 2012-05-03 |  |  |  |  |  |  |  |  |  |  |  |  |  |  |  |  |  |  |  |  |  |  |  |  |  |  |  |  |
| DVTTS01801C0 |  | DT-VT ; MEP de-snag, FIREM sign-off | 12d | 2011-12-05 | 2011-12-19 | DAFAF26039C0, DAFAF26041C0, DAFAF26045C0 | 260.5d | 90.5d |  | TESTING & COMMISSIONING [1020 h]; Cost | DVTTS01801C0 | DT | C | VT | TS | SC | 018 | 01 | BILL 11 | B05 | S2 | 01 | R00 | ACF07 | 018 |  |  |  |  |  |  |  |  |
| DVTTS01802C0 |  | DT-VT ; Touch-up & Clean / JV inspection /CIR /De-snag | 18d | 2012-04-05 | 2012-04-25 | DVT1414231C0, DVT2014231C0, DVT3614231C0, DVT5414231C0, DVTTS01801C0, IVT1614231C0 | 170d | 0d |  | TESTING & COMMISSIONING [170 h]; Cost | DVTTS01802C0 | DT | C | VT | TS | SC | 018 | 02 | BILL 11 | B05 | S2 | 02 | R00 | ACF07 | 018 |  |  |  |  |  |  |  |  |
| DVTTS01803C0 |  | DT-VT ; Consultant's final de-snag inspection | 7d | 2012-04-26 | 2012-05-03 | DVTTS01802C0 | 170d | 0d |  | Labor General [1 h]; Cost | DVTTS01803C0 | DT | C | VT | TS | SC | 018 | 03 | BILL 11 | B05 | S2 | 03 | R00 | ACF07 | 018 |  |  |  |  |  |  |  |  |
|  | VT | **Vertical Transpotation** |  | 2011-10-13 | 2012-11-11 |  |  |  |  |  |  |  |  |  |  |  |  |  |  |  |  |  |  |  |  |  |  |  |  |  |  |  |  |
|  | EL14 | **Lift (#14,15)** |  | 2012-02-01 | 2012-04-11 |  |  |  |  |  |  |  |  |  |  |  |  |  |  |  |  |  |  |  |  |  |  |  |  |  |  |  |  |
| DVT1414203C0 |  | DT-AF ; Ele(#14~15)- Fixing template, Plumbing (Lift) | 4d | 2012-02-01 | 2012-02-06 | D04SA03301C0, D04SB03303C0, DR5S103399C0, DR5S203399C0, DR5S303399C0, GNHE08101C10 FS+153d | 170.25d | 0d |  | SERVICE LIFTS [7 h]; Cost | DVT1414203C0 | DT | C | VT | 14 | EL | 142 | 03 | BILL 11 | B11 | S2 | 23 | R00 | ACF11 | 142 | 123044096 | 117440512 | LE |  |  |  |  |  |
| DVT1414205C0 |  | DT-AF ; Ele(#14~15)- Install first rails (Lift) | 3d | 2012-02-07 | 2012-02-09 | DVT1414203C0 | 170.25d | 0d |  | SERVICE LIFTS [15 h]; Cost | DVT1414205C0 | DT | C | VT | 14 | EL | 142 | 05 | BILL 11 | B11 | S2 | 23 | R00 | ACF11 | 142 | 125059072 | 117440512 | LE |  |  |  |  |  |
| DVT1414207C0 |  | DT-AF ; Ele(#14~15)- Build false car (Lift) | 3d | 2012-02-11 | 2012-02-13 | DVT1414205C0 | 170.25d | 0d |  | SERVICE LIFTS [22 h]; Cost | DVT1414207C0 | DT | C | VT | 14 | EL | 142 | 07 | BILL 11 | B11 | S2 | 23 | R00 | ACF11 | 142 | 123044096 | 117440512 | LE |  |  |  |  |  |
| DVT1414209C0 |  | DT-AF ; Ele(#14~15)- Install brackets, rails & alignment (Lift) | 5d | 2012-02-14 | 2012-02-19 | DVT1414207C0 | 170.25d | 0d |  | SERVICE LIFTS [284 h]; Cost | DVT1414209C0 | DT | C | VT | 14 | EL | 142 | 09 | BILL 11 | B11 | S2 | 23 | R00 | ACF11 | 142 | 125059072 | 117440512 | LE |  |  |  |  |  |
| DVT1414211C0 |  | DT-AF ; Ele(#14~15)- Install Entrance frames & doors (Lift) | 5d | 2012-02-20 | 2012-02-25 | DVT1414209C0 | 170.25d | 0d |  | SERVICE LIFTS [217 h]; Cost | DVT1414211C0 | DT | C | VT | 14 | EL | 142 | 11 | BILL 11 | B11 | S2 | 23 | R00 | ACF11 | 142 | 123044096 | 117440512 | LE |  |  |  |  |  |
| DVT1414213C0 |  | DT-AF ; Ele(#14~15)- Install Machine & Controller (Lift) | 2.88d | 2012-02-26 | 2012-02-28 | DVT1414211C0 | 170.25d | 0d |  | SERVICE LIFTS [307 h]; Cost | DVT1414213C0 | DT | C | VT | 14 | EL | 142 | 13 | BILL 11 | B11 | S2 | 23 | R00 | ACF11 | 142 | 125059072 | 117440512 | LE |  |  |  |  |  |
| DVT1414215C0 |  | DT-AF ; Ele(#14~15)- Install Governor & rope (Lift) | 2d | 2012-02-28 | 2012-03-01 | DVT1414213C0 | 170.25d | 0d |  | SERVICE LIFTS [60 h]; Cost | DVT1414215C0 | DT | C | VT | 14 | EL | 142 | 15 | BILL 11 | B11 | S2 | 23 | R00 | ACF11 | 142 | 123044096 | 117440512 | LE |  |  |  |  |  |
| DVT1414217C0 |  | DT-AF ; Ele(#14~15)- Install counterweight frame (Lift) | 2d | 2012-03-01 | 2012-03-04 | DVT1414215C0 | 170.25d | 0d |  | SERVICE LIFTS [60 h]; Cost | DVT1414217C0 | DT | C | VT | 14 | EL | 142 | 17 | BILL 11 | B11 | S2 | 23 | R00 | ACF11 | 142 | 125059072 | 117440512 | LE | 2011-09-12 |  |  |  |  |
| DVT1414219C0 |  | DT-AF ; Ele(#14~15)- Hoistway truncking & Wiring (Lift) | 4d | 2012-03-04 | 2012-03-08 | DVT1414217C0 | 170.25d | 0d |  | SERVICE LIFTS [75 h]; Cost | DVT1414219C0 | DT | C | VT | 14 | EL | 142 | 19 | BILL 11 | B11 | S2 | 23 | R00 | ACF11 | 142 | 123044096 | 117440512 | LE | 2011-09-12 | 2011-09-15 |  |  |  |
| DVT1414221C0 |  | DT-AF ; Ele(#14~15)- Machine room wiring (Lift) | 3.88d | 2012-03-08 | 2012-03-13 | DVT1414219C0 | 170.25d | 0d |  | SERVICE LIFTS [15 h]; Cost | DVT1414221C0 | DT | C | VT | 14 | EL | 142 | 21 | BILL 11 | B11 | S2 | 23 | R00 | ACF11 | 142 | 125059072 | 117440512 | LE |  |  |  |  |  |
| DVT1414223C0 |  | DT-AF ; Ele(#14~15)- Build car frame (Lift) | 2d | 2012-03-13 | 2012-03-15 | DVT1414221C0 | 170.25d | 0d |  | SERVICE LIFTS [112 h]; Cost | DVT1414223C0 | DT | C | VT | 14 | EL | 142 | 23 | BILL 11 | B11 | S2 | 23 | R00 | ACF11 | 142 | 123044096 | 117440512 | LE |  |  |  |  |  |
| DVT1414225C0 |  | DT-AF ; Ele(#14~15)- Main roping (Lift) | 3d | 2012-03-15 | 2012-03-19 | DVT1414223C0 | 170.25d | 0d |  | SERVICE LIFTS [60 h]; Cost | DVT1414225C0 | DT | C | VT | 14 | EL | 142 | 25 | BILL 11 | B11 | S2 | 23 | R00 | ACF11 | 142 | 125059072 | 117440512 | LE |  |  |  |  |  |
| DVT1414227C0 |  | DT-AF ; Ele(#14~15)- Loading counterweights (Lift) | 2d | 2012-03-19 | 2012-03-21 | DVT1414225C0 | 170.25d | 0d |  | SERVICE LIFTS [15 h]; Cost | DVT1414227C0 | DT | C | VT | 14 | EL | 142 | 27 | BILL 11 | B11 | S2 | 23 | R00 | ACF11 | 142 | 123044096 | 117440512 | LE |  |  |  |  |  |
| DVT1414229C0 |  | DT-AF ; Ele(#14~15)- Dismantling false car (Lift) | 2d | 2012-03-21 | 2012-03-24 | DVT1414227C0 | 170.25d | 0d |  | SERVICE LIFTS [7 h]; Cost | DVT1414229C0 | DT | C | VT | 14 | EL | 142 | 29 | BILL 11 | B11 | S2 | 23 | R00 | ACF11 | 142 | 125059072 | 117440512 | LE |  |  |  |  |  |
| DVT1414231C0 |  | DT-AF ; Ele(#14~15)- Build cab & Wiring (Lift) | 10d | 2012-03-24 | 2012-04-04 | DVT1414229C0 | 170.25d | 0d |  | SERVICE LIFTS [105 h]; Cost | DVT1414231C0 | DT | C | VT | 14 | EL | 142 | 31 | BILL 11 | B11 | S2 | 23 | R00 | ACF11 | 142 | 123044096 | 117440512 | LE |  |  |  |  |  |
| DVT1414247C0 |  | DT-AF ; Ele(#14~15)- Inspection, Testing & Commis (Lift) | 6d | 2012-04-04 | 2012-04-11 | DVT1414231C0 | 245.25d | 231.15d |  | SERVICE LIFTS [82 h]; Cost | CVT3914247C0 | DT | C | VT | 14 | EL | 142 | 47 | BILL 11 | B11 | S2 | 23 | R00 | ACF11 | 142 |  |  | LE |  |  | 1531 |  |  |
|  | EL20 | **Lift (#20~23)** |  | 2011-10-13 | 2012-11-11 |  |  |  |  |  |  |  |  |  |  |  |  |  |  |  |  |  |  |  |  |  |  |  |  |  |  |  |  |
| DVT2014203C0 |  | DT-AF ; Ele(#20~23)- Fixing template, Plumbing (Lift) | 4d | 2011-10-13 | 2011-10-17 | D04SA03301C0, D04SB03303C0, DR5S103399C0, DR5S203399C0, DR5S303399C0, GNHE08101C10 FS+42d | 71.64d | 0d |  | SERVICE LIFTS [15 h]; Cost | DVT2014203C0 | DT | C | VT | 20 | EL | 142 | 03 | BILL 11 | B11 | S2 | 20 | R00 | ACF11 | 142 | 123044096 | 117440512 | LE |  |  |  | 0 |  |
| DVT2014205C0 |  | DT-AF ; Ele(#20~23)- Install first rails (Lift) | 3d | 2011-10-18 | 2011-10-20 | DVT2014203C0 | 71.64d | 0d |  | SERVICE LIFTS [22 h]; Cost | DVT2014205C0 | DT | C | VT | 20 | EL | 142 | 05 | BILL 11 | B11 | S2 | 20 | R00 | ACF11 | 142 | 125059072 | 117440512 | LE |  |  |  |  |  |
| DVT2014207C0 |  | DT-AF ; Ele(#20~23)- Build false car (Lift) | 3d | 2011-10-22 | 2011-10-24 | DVT2014205C0 | 71.64d | 0d |  | SERVICE LIFTS [30 h]; Cost | DVT2014207C0 | DT | C | VT | 20 | EL | 142 | 07 | BILL 11 | B11 | S2 | 20 | R00 | ACF11 | 142 | 123044096 | 117440512 | LE |  |  |  |  |  |
| DVT2014209C0 |  | DT-AF ; Ele(#20~23)- Install brackets, rails & alignment (Lift) | 5d | 2011-10-25 | 2011-10-30 | DVT2014207C0 | 71.64d | 0d |  | SERVICE LIFTS [419 h]; Cost | DVT2014209C0 | DT | C | VT | 20 | EL | 142 | 09 | BILL 11 | B11 | S2 | 20 | R00 | ACF11 | 142 | 125059072 | 117440512 | LE |  |  |  |  |  |
| DVT2014211C0 |  | DT-AF ; Ele(#20~23)- Install Entrance frames & doors (Lift) | 5d | 2011-10-31 | 2011-11-05 | DVT2014209C0 | 71.64d | 0d |  | SERVICE LIFTS [314 h]; Cost | DVT2014211C0 | DT | C | VT | 20 | EL | 142 | 11 | BILL 11 | B11 | S2 | 20 | R00 | ACF11 | 142 | 123044096 | 117440512 | LE |  |  |  |  |  |
| DVT2014213C0 |  | DT-AF ; Ele(#20~23)- Install Machine & Controller (Lift) | 3d | 2011-11-09 | 2011-11-12 | DVT2014211C0 | 71.64d | 0d |  | SERVICE LIFTS [449 h]; Cost | DVT2014213C0 | DT | C | VT | 20 | EL | 142 | 13 | BILL 11 | B11 | S2 | 20 | R00 | ACF11 | 142 | 125059072 | 117440512 | LE |  |  |  |  |  |
| DVT2014215C0 |  | DT-AF ; Ele(#20~23)- Install Governor & rope (Lift) | 2d | 2011-11-13 | 2011-11-14 | DVT2014213C0 | 71.64d | 0d |  | SERVICE LIFTS [82 h]; Cost | DVT2014215C0 | DT | C | VT | 20 | EL | 142 | 15 | BILL 11 | B11 | S2 | 20 | R00 | ACF11 | 142 | 123044096 | 117440512 | LE |  |  |  |  |  |
| DVT2014217C0 |  | DT-AF ; Ele(#20~23)- Install counterweight frame (Lift) | 2d | 2011-11-15 | 2011-11-16 | DVT2014215C0 | 71.64d | 0d |  | SERVICE LIFTS [82 h]; Cost | DVT2014217C0 | DT | C | VT | 20 | EL | 142 | 17 | BILL 11 | B11 | S2 | 20 | R00 | ACF11 | 142 | 125059072 | 117440512 | LE | 2011-07-26 |  |  |  |  |
| DVT2014219C0 |  | DT-AF ; Ele(#20~23)- Hoistway truncking & Wiring (Lift) | 4d | 2011-11-17 | 2011-11-21 | DVT2014217C0 | 71.64d | 0d |  | SERVICE LIFTS [105 h]; Cost | DVT2014219C0 | DT | C | VT | 20 | EL | 142 | 19 | BILL 11 | B11 | S2 | 20 | R00 | ACF11 | 142 | 123044096 | 117440512 | LE | 2011-07-26 | 2011-07-29 |  |  | 100 |
| DVT2014221C0 |  | DT-AF ; Ele(#20~23)- Machine room wiring (Lift) | 4d | 2011-11-22 | 2011-11-27 | DVT2014219C0 | 71.64d | 0d |  | SERVICE LIFTS [22 h]; Cost | DVT2014221C0 | DT | C | VT | 20 | EL | 142 | 21 | BILL 11 | B11 | S2 | 20 | R00 | ACF11 | 142 | 125059072 | 117440512 | LE | 2011-07-30 | 2011-08-01 |  |  |  |
| DVT2014223C0 |  | DT-AF ; Ele(#20~23)- Build car frame (Lift) | 2d | 2011-11-28 | 2011-11-29 | DVT2014221C0 | 71.64d | 0d |  | SERVICE LIFTS [165 h]; Cost | DVT2014223C0 | DT | C | VT | 20 | EL | 142 | 23 | BILL 11 | B11 | S2 | 20 | R00 | ACF11 | 142 | 123044096 | 117440512 | LE | 2011-08-02 | 2011-08-04 |  |  |  |
| DVT2014225C0 |  | DT-AF ; Ele(#20~23)- Main roping (Lift) | 3d | 2011-11-30 | 2011-12-04 | DVT2014223C0 | 71.64d | 0d |  | SERVICE LIFTS [82 h]; Cost | DVT2014225C0 | DT | C | VT | 20 | EL | 142 | 25 | BILL 11 | B11 | S2 | 20 | R00 | ACF11 | 142 | 125059072 | 117440512 | LE | 2011-08-05 | 2011-08-09 |  |  |  |
| DVT2014227C0 |  | DT-AF ; Ele(#20~23)- Loading counterweights (Lift) | 2d | 2011-12-05 | 2011-12-06 | DVT2014225C0 | 71.64d | 0d |  | SERVICE LIFTS [22 h]; Cost | DVT2014227C0 | DT | C | VT | 20 | EL | 142 | 27 | BILL 11 | B11 | S2 | 20 | R00 | ACF11 | 142 | 123044096 | 117440512 | LE | 2011-08-11 | 2011-08-15 |  |  |  |
| DVT2014229C0 |  | DT-AF ; Ele(#20~23)- Dismantling false car (Lift) | 2d | 2011-12-07 | 2011-12-08 | DVT2014227C0 | 71.64d | 0d |  | SERVICE LIFTS [7 h]; Cost | DVT2014229C0 | DT | C | VT | 20 | EL | 142 | 29 | BILL 11 | B11 | S2 | 20 | R00 | ACF11 | 142 | 125059072 | 117440512 | LE | 2011-08-16 | 2011-08-18 |  |  |  |
| DVT2014231C0 |  | DT-AF ; Ele(#20~23)- Build cab & Wiring (Lift) | 10d | 2011-12-10 | 2011-12-20 | DVT2014229C0 | 71.64d | 0d |  | SERVICE LIFTS [157 h]; Cost | DVT2014231C0 | DT | C | VT | 20 | EL | 142 | 31 | BILL 11 | B11 | S2 | 20 | R00 | ACF11 | 142 | 123044096 | 117440512 | LE | 2011-08-19 | 2011-08-20 |  |  |  |
| DVT2014247C0 |  | DT-AF ; Ele(#20~23)- Inspection, Testing & Commis (Lift) | 6d | 2011-12-21 | 2011-12-27 | DVT2014231C0 | 71.64d | 52.4d |  | SERVICE LIFTS [112 h]; Cost | CVT3914247C0 | DT | C | VT | 20 | EL | 142 | 47 | BILL 11 | B11 | S2 | 20 | R00 | ACF11 | 142 |  |  | LE | 2011-09-11 | 2011-09-20 | 1531 |  |  |
| DVT2014248C0 |  | DT-AF ; Ele(#21&22)- Refurbishment | 35d | 2012-09-29 | 2012-11-11 | DVT2014247C0 | 11.15d | 0d | as late as possible | Labor General [1 h]; Cost | TVT3214247C0 | DT | C | VT | 20 | EL | 142 | 47 | BILL 11 | B11 | S2 | 13 | R00 | ACF11 | 142 | 125058816 |  | LE |  |  |  |  |  |

| ID | WBS | Activity | Duration | Start | Finish | Predecessors | Total float | Free float | Resources | change id | No.of Wor Days | Duration/Differe | CCAD BUILDING(SET) | CCAD PHASE(SET) | CCAD FLOOR(SET) | CCAD ZONE(SET) | CCAD WORK(SET) | CCAD SECTION(SET) | CCAD SERIAL No.(SET) | CCAD CBS(SET) | CCAD BILL(SET) | CCAD HANDOVER(SET) | CCAD TAG(SET) | CCAD REV(SET) | CCADACF (SET) | CCAD CSA | CCAD SSCF | user_end_date3 | user_end_date4 | NEW ACTIVITY ID |
| --- | --- | --- | --- | --- | --- | --- | --- | --- | --- | --- | --- | --- | --- | --- | --- | --- | --- | --- | --- | --- | --- | --- | --- | --- | --- | --- | --- | --- | --- | --- |
|  | EL36 | **Lift (#36~38)** |  | 2012-02-01 | 2012-04-11 |  |  |  |  |  |  |  |  |  |  |  |  |  |  |  |  |  |  |  |  |  |  |  |  |  |
| DVT3614203C0 |  | DT-AF ; Ele(#36~38)- Fixing template, Plumbing (Lift) | 4d | 2012-02-01 | 2012-02-06 | D04SA03301C0, D04SB03303C0, DR5S103399C0, DR5S203399C0, DR5S303399C0, GNHE08101C10 FS+153d | 170d | 0d | SERVICE LIFTS [22 h]; Cost | DVT3614203C0 | 125058816 | 117440512 | DT | C | VT | 36 | EL | 142 | 03 | BILL 11 | B11 | S2 | 10 | R00 | ACF11 | LE | 142 |  |  |  |
| DVT3614205C0 |  | DT-AF ; Ele(#36~38)- Install first rails (Lift) | 3d | 2012-02-07 | 2012-02-09 | DVT3614203C0 | 170d | 0d | SERVICE LIFTS [30 h]; Cost | DVT3614205C0 | 125058816 | 268435456 | DT | C | VT | 36 | EL | 142 | 05 | BILL 11 | B11 | S2 | 10 | R00 | ACF11 | LE | 142 |  |  |  |
| DVT3614207C0 |  | DT-AF ; Ele(#36~38)- Build false car (Lift) | 3d | 2012-02-11 | 2012-02-13 | DVT3614205C0 | 170d | 0d | SERVICE LIFTS [45 h]; Cost | DVT3614207C0 | 125058816 | 117440512 | DT | C | VT | 36 | EL | 142 | 07 | BILL 11 | B11 | S2 | 10 | R00 | ACF11 | LE | 142 |  |  |  |
| DVT3614209C0 |  | DT-AF ; Ele(#36~38)- Install brackets, rails & alignment (Lift) | 5d | 2012-02-14 | 2012-02-19 | DVT3614207C0 | 170d | 0d | SERVICE LIFTS [554 h]; Cost | DVT3614209C0 |  | 117440512 | DT | C | VT | 36 | EL | 142 | 09 | BILL 11 | B11 | S2 | 10 | R00 | ACF11 | LE | 142 |  |  |  |
| DVT3614211C0 |  | DT-AF ; Ele(#36~38)- Install Entrance frames & doors (Lift) | 5d | 2012-02-20 | 2012-02-25 | DVT3614209C0 | 170d | 0d | SERVICE LIFTS [411 h]; Cost | DVT3614211C0 |  |  | DT | C | VT | 36 | EL | 142 | 11 | BILL 11 | B11 | S2 | 10 | R00 | ACF11 | LE | 142 |  |  |  |
| DVT3614213C0 |  | DT-AF ; Ele(#36~38)- Install Machine & Controller (Lift) | 3d | 2012-02-26 | 2012-02-28 | DVT3614211C0 | 170d | 0d | SERVICE LIFTS [583 h]; Cost | DVT3614213C0 | -256 | 117440512 | DT | C | VT | 36 | EL | 142 | 13 | BILL 11 | B11 | S2 | 10 | R00 | ACF11 | LE | 142 |  |  |  |
| DVT3614215C0 |  | DT-AF ; Ele(#36~38)- Install Governor & rope (Lift) | 2d | 2012-02-29 | 2012-03-01 | DVT3614213C0 | 170d | 0d | SERVICE LIFTS [112 h]; Cost | DVT3614215C0 | 125058816 | 117440512 | DT | C | VT | 36 | EL | 142 | 15 | BILL 11 | B11 | S2 | 10 | R00 | ACF11 | LE | 142 |  |  |  |
| DVT3614217C0 |  | DT-AF ; Ele(#36~38)- Install counterweight frame (Lift) | 2d | 2012-03-03 | 2012-03-04 | DVT3614215C0 | 170d | 0d | SERVICE LIFTS [112 h]; Cost | DVT3614217C0 |  |  | DT | C | VT | 36 | EL | 142 | 17 | BILL 11 | B11 | S2 | 10 | R00 | ACF11 | LE | 142 | 2011-09-12 |  |  |
| DVT3614219C0 |  | DT-AF ; Ele(#36~38)- Hoistway truncking & Wiring (Lift) | 4d | 2012-03-05 | 2012-03-08 | DVT3614217C0 | 170d | 0d | SERVICE LIFTS [135 h]; Cost | DVT3614219C0 | 125058816 | 117440512 | DT | C | VT | 36 | EL | 142 | 19 | BILL 11 | B11 | S2 | 10 | R00 | ACF11 | LE | 142 | 2011-09-12 | 2011-09-15 |  |
| DVT3614221C0 |  | DT-AF ; Ele(#36~38)- Machine room wiring (Lift) | 4d | 2012-03-10 | 2012-03-13 | DVT3614219C0 | 170d | 0d | SERVICE LIFTS [30 h]; Cost | DVT3614221C0 | -256 | 117440512 | DT | C | VT | 36 | EL | 142 | 21 | BILL 11 | B11 | S2 | 10 | R00 | ACF11 | LE | 142 |  |  |  |
| DVT3614223C0 |  | DT-AF ; Ele(#36~38)- Build car frame (Lift) | 2d | 2012-03-14 | 2012-03-15 | DVT3614221C0 | 170d | 0d | SERVICE LIFTS [224 h]; Cost | DVT3614223C0 | 125058816 | -16777216 | DT | C | VT | 36 | EL | 142 | 23 | BILL 11 | B11 | S2 | 10 | R00 | ACF11 | LE | 142 |  |  |  |
| DVT3614225C0 |  | DT-AF ; Ele(#36~38)- Main roping (Lift) | 3d | 2012-03-17 | 2012-03-19 | DVT3614223C0 | 170d | 0d | SERVICE LIFTS [112 h]; Cost | DVT3614225C0 |  | 117440512 | DT | C | VT | 36 | EL | 142 | 25 | BILL 11 | B11 | S2 | 10 | R00 | ACF11 | LE | 142 |  |  |  |
| DVT3614227C0 |  | DT-AF ; Ele(#36~38)- Loading counterweights (Lift) | 2d | 2012-03-20 | 2012-03-21 | DVT3614225C0 | 170d | 0d | SERVICE LIFTS [30 h]; Cost | DVT3614227C0 |  |  | DT | C | VT | 36 | EL | 142 | 27 | BILL 11 | B11 | S2 | 10 | R00 | ACF11 | LE | 142 |  |  |  |
| DVT3614229C0 |  | DT-AF ; Ele(#36~38)- Dismantling false car (Lift) | 2d | 2012-03-22 | 2012-03-24 | DVT3614227C0 | 170d | 0d | SERVICE LIFTS [15 h]; Cost | DVT3614229C0 |  |  | DT | C | VT | 36 | EL | 142 | 29 | BILL 11 | B11 | S2 | 10 | R00 | ACF11 | LE | 142 |  |  |  |
| DVT3614231C0 |  | DT-AF ; Ele(#36~38)- Build cab & Wiring (Lift) | 10d | 2012-03-25 | 2012-04-04 | DVT3614229C0 | 170d | 0d | SERVICE LIFTS [209 h]; Cost | DVT3614231C0 | 125058816 |  | DT | C | VT | 36 | EL | 142 | 31 | BILL 11 | B11 | S2 | 10 | R00 | ACF11 | LE | 142 |  |  |  |
| DVT3614247C0 |  | DT-AF ; Ele(#36~38)- Inspection, Testing & Commis (Lift) | 6d | 2012-04-05 | 2012-04-11 | DVT3614231C0 | 245d | 230.9d | SERVICE LIFTS [150 h]; Cost | CVT3914247C0 |  |  | DT | C | VT | 36 | EL | 142 | 47 | BILL 11 | B11 | S2 | 10 | R00 | ACF11 | LE | 142 |  |  | 1531 |
|  | EL54 | **Lift (#54)** |  | 2011-12-01 | 2012-01-23 |  |  |  |  |  |  |  |  |  |  |  |  |  |  |  |  |  |  |  |  |  |  |  |  |  |
| DVT5414203C0 |  | DT-AF ; Ele(#54)- Fixing template, Plumbing (Lift) | 4d | 2011-12-01 | 2011-12-06 | D04SA03301C0, D04SB03303C0, DR5S103399C0, DR5S203399C0, DR5S303399C0, GNHE08101C10 FS+91d | 237d | 0d | SERVICE LIFTS [150 h]; Cost | DVT5414203C0 | 125058816 | 117440512 | DT | C | VT | 54 | EL | 142 | 03 | BILL 11 | B11 | S2 | 02 | R00 | ACF11 | LE | 142 |  |  |  |
| DVT5414205C0 |  | DT-AF ; Ele(#54)- Install first rails (Lift) | 3d | 2011-12-07 | 2011-12-10 | DVT5414203C0 | 237d | 0d | SERVICE LIFTS [45 h]; Cost | DVT5414205C0 |  | 117440512 | DT | C | VT | 54 | EL | 142 | 05 | BILL 11 | B11 | S2 | 02 | R00 | ACF11 | LE | 142 |  |  |  |
| DVT5414207C0 |  | DT-AF ; Ele(#54)- Build false car (Lift) | 1d | 2011-12-11 | 2011-12-11 | DVT5414205C0 | 237d | 0d | SERVICE LIFTS [0.5 h]; Cost | DVT5414207C0 | -65536 | 117440512 | DT | C | VT | 54 | EL | 142 | 07 | BILL 11 | B11 | S2 | 02 | R00 | ACF11 | LE | 142 |  |  |  |
| DVT5414209C0 |  | DT-AF ; Ele(#54)- Install brackets, rails & alignment (Lift) | 5d | 2011-12-12 | 2011-12-17 | DVT5414207C0 | 237d | 0d | SERVICE LIFTS [180 h]; Cost | DVT5414209C0 | 125058816 |  | DT | C | VT | 54 | EL | 142 | 09 | BILL 11 | B11 | S2 | 02 | R00 | ACF11 | LE | 142 |  |  |  |
| DVT5414211C0 |  | DT-AF ; Ele(#54)- Install Entrance frames & doors (Lift) | 5d | 2011-12-18 | 2011-12-22 | DVT5414209C0 | 237d | 0d | SERVICE LIFTS [180 h]; Cost | DVT5414211C0 | 125058816 |  | DT | C | VT | 54 | EL | 142 | 11 | BILL 11 | B11 | S2 | 02 | R00 | ACF11 | LE | 142 |  |  |  |
| DVT5414213C0 |  | DT-AF ; Ele(#54)- Install Machine & Controller (Lift) | 1d | 2011-12-24 | 2011-12-24 | DVT5414211C0 | 237d | 0d | SERVICE LIFTS [0.5 h]; Cost | DVT5414213C0 | 123044096 | 1593835520 | DT | C | VT | 54 | EL | 142 | 13 | BILL 11 | B11 | S2 | 02 | R00 | ACF11 | LE | 142 |  |  |  |
| DVT5414215C0 |  | DT-AF ; Ele(#54)- Install Governor & rope (Lift) | 0d | 2011-12-25 | 2011-12-25 | DVT5414213C0 | 237d | 0d | SERVICE LIFTS; Cost | DVT5414215C0 | 125058816 |  | DT | C | VT | 54 | EL | 142 | 15 | BILL 11 | B11 | S2 | 02 | R00 | ACF11 | LE | 142 |  |  |  |
| DVT5414217C0 |  | DT-AF ; Ele(#54)- Install counterweight frame (Lift) | 0d | 2011-12-25 | 2011-12-25 | DVT5414215C0 | 237d | 0d | SERVICE LIFTS; Cost | DVT5414217C0 | 125058816 |  | DT | C | VT | 54 | EL | 142 | 17 | BILL 11 | B11 | S2 | 02 | R00 | ACF11 | LE | 142 |  |  |  |
| DVT5414219C0 |  | DT-AF ; Ele(#54)- Hoistway truncking & Wiring (Lift) | 4d | 2011-12-25 | 2011-12-28 | DVT5414217C0 | 237d | 0d | SERVICE LIFTS [45 h]; Cost | DVT5414219C0 | 123044096 | 117440512 | DT | C | VT | 54 | EL | 142 | 19 | BILL 11 | B11 | S2 | 02 | R00 | ACF11 | LE | 142 |  |  |  |
| DVT5414221C0 |  | DT-AF ; Ele(#54)- Machine room wiring (Lift) | 2d | 2011-12-29 | 2011-12-31 | DVT5414219C0 | 237d | 0d | SERVICE LIFTS [0.5 h]; Cost | DVT5414221C0 |  |  | DT | C | VT | 54 | EL | 142 | 21 | BILL 11 | B11 | S2 | 02 | R00 | ACF11 | LE | 142 |  |  |  |
| DVT5414223C0 |  | DT-AF ; Ele(#54)- Build car frame (Lift) | 2d | 2012-01-02 | 2012-01-03 | DVT5414221C0 | 237d | 0d | SERVICE LIFTS [90 h]; Cost | DVT5414223C0 | 538976256 |  | DT | C | VT | 54 | EL | 142 | 23 | BILL 11 | B11 | S2 | 02 | R00 | ACF11 | LE | 142 |  |  |  |
| DVT5414225C0 |  | DT-AF ; Ele(#54)- Main roping (Lift) | 1d | 2012-01-04 | 2012-01-04 | DVT5414223C0 | 237d | 0d | SERVICE LIFTS [0.5 h]; Cost | DVT5414225C0 | 123044096 |  | DT | C | VT | 54 | EL | 142 | 25 | BILL 11 | B11 | S2 | 02 | R00 | ACF11 | LE | 142 |  |  |  |
| DVT5414227C0 |  | DT-AF ; Ele(#54)- Loading counterweights (Lift) | 0d | 2012-01-05 | 2012-01-05 | DVT5414225C0 | 237d | 0d | SERVICE LIFTS; Cost | DVT5414227C0 | 125058816 | 268435456 | DT | C | VT | 54 | EL | 142 | 27 | BILL 11 | B11 | S2 | 02 | R00 | ACF11 | LE | 142 |  |  |  |
| DVT5414229C0 |  | DT-AF ; Ele(#54)- Dismantling false car (Lift) | 0d | 2012-01-05 | 2012-01-05 | DVT5414227C0 | 237d | 0d | SERVICE LIFTS; Cost | DVT5414229C0 | 123044096 |  | DT | C | VT | 54 | EL | 142 | 29 | BILL 11 | B11 | S2 | 02 | R00 | ACF11 | LE | 142 |  |  |  |
| DVT5414231C0 |  | DT-AF ; Ele(#54)- Build cab & Wiring (Lift) | 10d | 2012-01-05 | 2012-01-16 | DVT5414229C0 | 237d | 0d | SERVICE LIFTS [135 h]; Cost | DVT5414231C0 |  | 117440512 | DT | C | VT | 54 | EL | 142 | 31 | BILL 11 | B11 | S2 | 02 | R00 | ACF11 | LE | 142 |  |  |  |
| DVT5414247C0 |  | DT-AF ; Ele(#54)- Inspection, Testing & Commis (Lift) | 6d | 2012-01-17 | 2012-01-23 | DVT5414231C0 | 312d | 297.9d | SERVICE LIFTS [67 h]; Cost | CVT3914247C0 |  |  | DT | C | VT | 54 | EL | 142 | 47 | BILL 11 | B11 | S2 | 02 | R00 | ACF11 | LE | 142 |  |  | 1531 |

| ID | WBS | Activity | Duration | Start | Finish | Predecessors | Total float | Free float | Resources | change id | No.of Wor Days | CCAD BUILDING(SET) | CCAD PHASE(SET) | CCAD FLOOR(SET) | CCAD ZONE(SET) | CCAD WORK(SET) | CCAD SECTION(SET) | CCAD SERIAL No.(SET) | CCAD CBS(SET) | CCAD BILL(SET) | CCAD HANDOVER(SET) | CCAD TAG(SET) | CCAD REV(SET) | CCADACF (SET) | CCAD CSA | CCAD SSCF |
| --- | --- | --- | --- | --- | --- | --- | --- | --- | --- | --- | --- | --- | --- | --- | --- | --- | --- | --- | --- | --- | --- | --- | --- | --- | --- | --- |
|  | 1 | **Platform Lift at P1** |  | 2012-03-24 | 2012-05-05 |  |  |  |  |  |  |  |  |  |  |  |  |  |  |  |  |  |  |  |  |  |
| DP15414225C0 |  | DT-P1 ; Platform Lift (P1) | 36d | 2012-03-24 | 2012-05-05 | DP1PA09205C0 | 98.3d | 64.5d | SERVICE LIFTS [187 h]; Cost | DVT5414225C0 | 123044096 | DT | C | VT | PL | EL | 142 | 25 | BILL 11 | B11 | S2 | 01 | R00 | ACF11 | LE | 142 |
|  | CZ1 | **Controlled Zone( P3,P2,P1,1)** |  | 2013-01-15 | 2013-03-12 |  |  |  |  |  |  |  |  |  |  |  |  |  |  |  |  |  |  |  |  |  |
| DGNCZ01010G0 |  | DT-S1 ; Minor Punch List (Controlled Zone) | 47d | 2013-01-15 | 2013-03-12 | MGNCZ00103M0 | 45.1d | 0d | TESTING & COMMISSIONING [850 h]; Cost | DGNCZ01010G0 |  | DT | G | GN | CZ | SC | 010 | 10 | BILL 5 | B05 | S1 | PI | R00 | ACF07 |  | 010 |
| DGNCZ01810G0 |  | DT-S1 ; Medical Equipment Installation , T&C by 3rd Party (Controlled Zone) | 0d | 2013-01-15 | 2013-01-15 | MGNCZ00103M0 | 92.1d | 47d | Cost |  |  | DT |  |  | CZ |  |  |  |  | B05 |  |  | R00 |  |  | GEN |
| DGNCZ01811G0 |  | DT-S1 ; Fire Alarm , PMCS & EMCS Testing & Commissioning (Controlled Zone) | 47d | 2013-01-15 | 2013-03-12 | MGNCZ00103M0 | 45.1d | 0d | TESTING & COMMISSIONING [5098 h]; Cost | DGNCZ01811G0 |  | DT | G | GN | CZ | SC | 018 | 11 | BILL 5 | B05 | S1 | 01 | R00 | ACF07 |  | 018 |
| DGNCZ11010G0 |  | DT-S1 ; Loose FF & E (Controlled Zone) - P3,P2,P1,1 | 0d | 2013-01-15 | 2013-01-15 | MGNCZ00103M0, DAFCO11001R2 FF | 92.1d | 47d | Cost | DGNCZ11010G0 |  | DT | G | GN | CZ | FI | 110 | 10 | BILL 5 | B05 | S1 | 02 | R00 | ACF08 |  | a |
| DGNCZ11020G0 |  | DT-S1 ; Wall Mounted / Sensitive Equipment Install (Controlled Zone) - P3,P2,P1,1 | 0d | 2013-01-15 | 2013-01-15 | MGNCZ00103M0 | 92.1d | 47d | Cost | DGNCZ11020G0 |  | DT | G | GN | CZ | SC | 110 | 20 | BILL 5 | B05 | S1 | 02 | R00 | ACF08 |  | d |
| DGNCZ01130G0 |  | DT-S1 ; Cleaning & Final Inspection (Controlled Zone) | 0d | 2013-03-12 | 2013-03-12 | DGNCZ11010G0, DGNCZ01010G0, DGNCZ11020G0, DGNCZ01811G0, DGNCZ01810G0 | 45.1d | 42.23d | Cost | TGNCZ01020G0 |  | PT | G | GN | CZ | SC | 010 | 20 | BILL 10 | B10 | S3 | IN | R00 | ACF07 |  | 010 |
|  | CZ2 | **Controlled Zone (G)** |  | 2012-11-11 | 2013-03-14 |  |  |  |  |  |  |  |  |  |  |  |  |  |  |  |  |  |  |  |  |  |
| DS2CZ01011G0 |  | DT-S1 ; Minor Punch List (Controlled Zone) | 102d | 2012-11-11 | 2013-03-14 | MGNCZ00106M0 | 43.15d | 0d | TESTING & COMMISSIONING [850 h]; Cost | DGNCZ01010G0 |  | DT | G | GN | CZ | SC | 010 | 10 | BILL 5 | B05 | S2 | PI | R00 | ACF07 |  | 010 |
| DS2CZ01120G0 |  | DT-S1 ; Fire Alarm , PMCS & EMCS Testing & Commissioning (Controlled Zone) | 102d | 2012-11-11 | 2013-03-14 | MGNCZ00106M0 | 43.15d | 0d | TESTING & COMMISSIONING [5098 h]; Cost | DGNCZ01811G0 |  | DT | G | GN | CZ | SC | 018 | 11 | BILL 5 | B05 | S2 | 01 | R00 | ACF07 |  | 018 |
| DS2CZ01810G0 |  | DT-S1 ; Medical Equipment Installation , T&C by 3rd Party (Controlled Zone) | 0d | 2012-11-11 | 2012-11-11 | MGNCZ00106M0 | 145.15d | 102d | Cost |  |  | DT |  |  | CZ |  |  |  |  | B05 |  |  | R00 |  |  | GEN |
| DS2CZ11014G0 |  | DT-S1 ; Loose FF & E (Controlled Zone) - GF | 0d | 2012-11-11 | 2012-11-11 | MGNCZ00106M0 | 145.15d | 102d | Cost | DGNCZ11010G0 |  | DT | G | GN | CZ | FI | 110 | 10 | BILL 5 | B05 | S2 | 02 | R00 | ACF08 |  | a |
| DS2CZ11020G0 |  | DT-S1 ; Wall Mounted / Sensitive Equipment Install (Controlled Zone) -GF | 0d | 2012-11-11 | 2012-11-11 | MGNCZ00106M0 | 145.15d | 102d | Cost | DGNCZ11020G0 |  | DT | G | GN | CZ | SC | 110 | 20 | BILL 5 | B05 | S2 | 02 | R00 | ACF08 |  | d |
| DS2CZ01130G0 |  | DT-S1 ; Cleaning & Final Inspection (Controlled Zone) | 0d | 2013-03-14 | 2013-03-14 | DS2CZ11014G0, DS2CZ01011G0, DS2CZ11020G0, DS2CZ01120G0, DS2CZ01810G0 | 43.15d | 40.27d | Cost | TGNCZ01020G0 |  | PT | G | GN | CZ | SC | 010 | 20 | BILL 10 | B10 | S3 | IN | R00 | ACF07 |  | 010 |
|  | CZ22 | **Controlled Zone (2)** |  | 2012-12-22 | 2013-03-16 |  |  |  |  |  |  |  |  |  |  |  |  |  |  |  |  |  |  |  |  |  |
| DS2CZ01020G0 |  | DT-S1 ; Minor Punch List (Controlled Zone) | 70d | 2012-12-22 | 2013-03-16 | MGNCZ00108M0 | 42.27d | 0d | TESTING & COMMISSIONING; Cost | DGNCZ01010G0 |  | DT | G | GN | CZ | SC | 010 | 10 | BILL 5 | B05 | S2 | PI | R00 | ACF07 |  | 010 |
| DS2CZ01812G0 |  | DT-S1 ; Fire Alarm , PMCS & EMCS Testing & Commissioning (Controlled Zone) | 70d | 2012-12-22 | 2013-03-16 | MGNCZ00108M0 | 42.27d | 0d | TESTING & COMMISSIONING; Cost | DGNCZ01811G0 |  | DT | G | GN | CZ | SC | 018 | 11 | BILL 5 | B05 | S2 | 01 | R00 | ACF07 |  | 018 |
| DS2CZ01820G0 |  | DT-S1 ; Medical Equipment Installation , T&C by 3rd Party (Controlled Zone) | 0d | 2012-12-22 | 2012-12-22 | MGNCZ00108M0 | 112.28d | 70d | Cost |  |  | DT |  |  | CZ |  |  |  |  | B05 |  |  | R00 |  |  | GEN |
| DS2CZ11010G0 |  | DT-S1 ; Loose FF & E (Controlled Zone) - L2 | 0d | 2012-12-22 | 2012-12-22 | MGNCZ00108M0 | 112.28d | 70d | Cost | DGNCZ11010G0 |  | DT | G | GN | CZ | FI | 110 | 10 | BILL 5 | B05 | S2 | 02 | R00 | ACF08 |  | a |
| DS2CZ11030G0 |  | DT-S1 ; Wall Mounted / Sensitive Equipment Install (Controlled Zone) - L2 | 0d | 2012-12-22 | 2012-12-22 | MGNCZ00108M0 | 112.28d | 70d | Cost | DGNCZ11020G0 |  | DT | G | GN | CZ | SC | 110 | 20 | BILL 5 | B05 | S2 | 02 | R00 | ACF08 |  | d |
| DS2CZ01110G0 |  | DT-S1 ; Cleaning & Final Inspection (Controlled Zone) | 0d | 2013-03-16 | 2013-03-16 | DS2CZ01820G0, DS2CZ11010G0, DS2CZ01020G0, DS2CZ11030G0, DS2CZ01812G0 | 42.27d | 39.4d | Cost | TGNCZ01020G0 |  | PT | G | GN | CZ | SC | 010 | 20 | BILL 10 | B10 | S3 | IN | R00 | ACF07 |  | 010 |
|  | CZ21 | **Controlled Zone (3,4)** |  | 2013-01-13 | 2013-03-18 |  |  |  |  |  |  |  |  |  |  |  |  |  |  |  |  |  |  |  |  |  |
| DS2CZ01010G0 |  | DT-S1 ; Minor Punch List (Controlled Zone) | 54d | 2013-01-13 | 2013-03-18 | MGNCZ00104M0 | 40.02d | 0d | TESTING & COMMISSIONING; Cost | DGNCZ01010G0 |  | DT | G | GN | CZ | SC | 010 | 10 | BILL 5 | B05 | S2 | PI | R00 | ACF07 |  | 010 |
| DS2CZ01811G0 |  | DT-S1 ; Fire Alarm , PMCS & EMCS Testing & Commissioning (Controlled Zone) | 54d | 2013-01-13 | 2013-03-18 | MGNCZ00104M0 | 40.02d | 0d | TESTING & COMMISSIONING; Cost | DGNCZ01811G0 |  | DT | G | GN | CZ | SC | 018 | 11 | BILL 5 | B05 | S2 | 01 | R00 | ACF07 |  | 018 |
| DS2CZ01830G0 |  | DT-S1 ; Medical Equipment Installation , T&C by 3rd Party (Controlled Zone) | 0d | 2013-01-13 | 2013-01-13 | MGNCZ00104M0 | 94.03d | 54d | Cost |  |  | DT |  |  | CZ |  |  |  |  | B05 |  |  | R00 |  |  | GEN |
| DS2CZ11012G0 |  | DT-S1 ; Loose FF & E (Controlled Zone) -L3, L4 | 0d | 2013-01-13 | 2013-01-13 | MGNCZ00104M0 | 94.03d | 54d | Cost | DGNCZ11010G0 |  | DT | G | GN | CZ | FI | 110 | 10 | BILL 5 | B05 | S2 | 02 | R00 | ACF08 |  | a |
| DS2CZ11040G0 |  | DT-S1 ; Wall Mounted / Sensitive Equipment Install (Controlled Zone) - L3, L4 | 0d | 2013-01-13 | 2013-01-13 | MGNCZ00104M0 | 94.03d | 54d | Cost | DGNCZ11020G0 |  | DT | G | GN | CZ | SC | 110 | 20 | BILL 5 | B05 | S2 | 02 | R00 | ACF08 |  | d |
| DS2CZ01100G0 |  | DT-S1 ; Cleaning & Final Inspection (Controlled Zone) | 0d | 2013-03-18 | 2013-03-18 | DS2CZ01830G0, DS2CZ11012G0, DS2CZ01010G0, DS2CZ11040G0, DS2CZ01811G0 | 40.02d | 37.15d | Cost | TGNCZ01020G0 |  | PT | G | GN | CZ | SC | 010 | 20 | BILL 10 | B10 | S3 | IN | R00 | ACF07 |  | 010 |

| ID | WBS | Activity | Duration | Start | Finish | Predecessors | Complete | Remaining | Planned start | Planned finish | Total float | Free float | Resources | change id | P_811 | P_711 | CCAD BUILDING(SET) | CCAD PHASE(SET) | CCAD FLOOR(SET) | CCAD ZONE(SET) | CCAD WORK(SET) | CCAD SECTION(SET) | CCAD SERIAL No.(SET) | CCAD RESPONSIBILITY(SET) | CCAD BILL(SET) | CCAD HANDOVER(SET) | CCAD TAG(SET) | CCAD REV(SET) | CCADACF (SET) | CCAD CSA | CCAD SSCF | Change Order # | NEW ACTIVITY ID | RENZ % COMPLETE | CCAD CBS(SET) | CCAD DIVISION(SET) |
| --- | --- | --- | --- | --- | --- | --- | --- | --- | --- | --- | --- | --- | --- | --- | --- | --- | --- | --- | --- | --- | --- | --- | --- | --- | --- | --- | --- | --- | --- | --- | --- | --- | --- | --- | --- | --- |
|  | GA | **Gallery** |  | 2010-05-30 | 2013-02-26 |  |  |  |  |  |  |  |  |  |  |  |  |  |  |  |  |  |  |  |  |  |  |  |  |  |  |  |  |  |  |  |
|  | OA | **Overall** |  | 2011-06-07 | 2012-02-06 |  |  |  |  |  |  |  |  |  |  |  |  |  |  |  |  |  |  |  |  |  |  |  |  |  |  |  |  |  |  |  |
| GAFT1805509C0 |  | GA - Steel Staircase Installation (Stair # 18) (P3 to 2F) | 35d | 2011-06-07 A | 2011-10-02 | BAFT1805509C1 FS+3d | 95% | 1.75d | 2011-07-04 | 2011-08-13 | 215.75d | 159.46d | STRUCTURAL STEEL [43 T(Fe)]; Cost | IP3SE03305C0 | 90 | 80 | GA | C | AF | GEN | SW | 055 | 05 | PP | B06 | S1 | 01 | R00 | ACF03 | ST | 055 |  |  |  |  |  |
| GAFT1405509C0 |  | GA - Steel Staircase Installation (Stair # 14) (P2 to 3F) | 21d | 2011-07-03 A | 2011-07-27 A | CAFT1405509C0 | 100% |  | 2011-08-03 | 2011-08-27 |  |  | STRUCTURAL STEEL [33 T(Fe)]; Cost | IP3SE03305C0 |  |  | GA | C | AF | GEN | SW | 055 | 05 |  | B06 | S1 | 01 | R00 | ACF03 | ST | 055 |  |  |  |  |  |
| GAFT1705509C0 |  | GA - Steel Staircase Installation (Stair # 17) (P2 to 2F) | 9.88d | 2011-10-01 | 2011-10-11 | BAFT1705509C1 |  |  |  |  | 207.63d | 152.12d | STRUCTURAL STEEL [40 T(Fe)]; Cost | IP3SE03305C0 |  |  | GA | C | AF | GEN | SW | 055 | 05 | PP | B06 | S1 | 01 | R00 | ACF03 | ST | 055 |  |  |  |  |  |
| GAFT1905509C0 |  | GA - Steel Staircase Installation (Stair # 19) (P2 to GF) | 15d | 2011-10-10 | 2011-10-26 | BAFT1905509C1 FS+8d |  |  |  |  | 194.5d | 139d | STRUCTURAL STEEL [20 T(Fe)]; Cost | IP3SE03305C0 |  |  | GA | C | AF | GEN | SW | 055 | 05 | PP | B06 | S1 | 01 | R00 | ACF03 | ST | 055 |  |  |  |  |  |
| GAFT2105509C0 |  | GA - Steel Staircase Installation (Stair # 21) (P3 to P2) | 10d | 2011-11-27 | 2011-12-08 | BAFT2105509C1 FS+45d |  |  |  |  | 162.5d | 106.21d | STRUCTURAL STEEL [8 T(Fe)]; Cost | IP3SE03305C0 |  |  | GA | C | AF | GEN | SW | 055 | 05 | PP | B06 | S1 | 01 | R00 | ACF03 | ST | 055 |  |  |  |  |  |
| GAFT2005509C0 |  | GA - Steel Staircase Installation (Stair # 20) (P3 to P1) | 15d | 2012-01-19 | 2012-02-06 | BAFT2005509C1 FS+45d |  |  |  |  | 113.5d | 57.21d | STRUCTURAL STEEL [14 T(Fe)]; Cost | IP3SE03305C0 |  |  | GA | C | AF | GEN | SW | 055 | 05 | PP | B06 | S1 | 01 | R00 | ACF03 | ST | 055 |  |  |  |  |  |
|  | FN | **Foundation** |  | 2010-05-30 | 2011-10-01 |  |  |  |  |  |  |  |  |  |  |  |  |  |  |  |  |  |  |  |  |  |  |  |  |  |  |  |  |  |  |  |
|  | S1 | **Zone S1** |  | 2010-06-17 | 2011-10-01 |  |  |  |  |  |  |  |  |  |  |  |  |  |  |  |  |  |  |  |  |  |  |  |  |  |  |  |  |  |  |  |
| GFNS131201C0 |  | GA-FN ; Pilecap-Excavation & Compaction (Zone S1) | 12d | 2010-06-17 A | 2010-12-30 A | MGNMI00101M0 FS+100d | 100% |  | 2010-11-01 | 2010-11-14 |  |  | EXCAVATION & BACKFILLING [808 h]; EXCAVATION & BACKFILLING [532 m3]; Cost | GFNS131201C0 |  |  | GA | C | FN | S1 | CT | 312 | 01 |  | B06 | S1 | 03 | R00 | ACF02 |  | 312 | 40 | 40 | 100 | BILL 6 |  |
| GFNS131203C0 |  | GA-FN ; Pilecap-Pilecap treatment (Zone S1) | 15d | 2010-06-20 A | 2011-01-02 A | GFNS131201C0 | 100% |  | 2010-11-18 | 2010-12-05 |  |  | Cost | GFNS131203C0 |  |  | GA | C | FN | S1 | CT | 312 | 03 |  | B06 | S1 | 02 | R00 | ACF02 |  | 312 | 41 | 41 | 100 | BILL 6 |  |
| GFNS103305C0 |  | GA-FN ; Pilecap-Blinding concrete (Zone S1) | 24d | 2010-06-24 A | 2011-01-02 A | GFNS131203C0 SS+10d | 100% |  | 2010-11-30 | 2010-12-28 |  |  | ANTI-TERMITE [3336 h]; CONCRETE [1392 h]; CONCRETE [35 m3]; ANTI-TERMITE [29 m2]; Cost | GFNS103305C0 |  |  | GA | C | FN | S1 | CT | 033 | 05 |  | B06 | S1 | 01 | R00 | ACF02 |  | 033 | 42 | 42 | 100 | BILL 6 | 03 |
| GFNS107101C0 |  | GA-FN ; Pilecap-Horizontal waterproofing (Zone S1) | 24d | 2010-06-30 A | 2011-01-03 A | GFNS103305C0 SS+3d, GFNS103305C0 FF | 100% |  | 2010-12-04 | 2011-01-02 |  |  | THERMAL & MOISTURE [744 h]; THERMAL & MOISTURE [985 m2]; Cost | GFNS107101C0 |  |  | GA | C | FN | S1 | CT | 071 | 01 |  | B06 | S1 | 02 | R00 | ACF02 |  | 071 | 43 | 43 | 100 | BILL 6 |  |
| GFNS103317C0 |  | GA-FN ; Pilecap-Pilecap concrete (Zone S1) | 75d | 2010-07-17 A | 2011-01-05 A | GAFOA31203C1 FF, GFNS107101C0 SS+2d, GFNS107101C0 FF | 100% |  | 2010-12-06 | 2011-03-05 |  |  | CONCRETE [54696 h]; CONCRETE [1376 m3]; Cost | GFNS103317C0 |  |  | GA | C | FN | S1 | CT | 033 | 17 |  | B06 | S1 | 02 | R00 | ACF02 |  | 033 | 5 | 5 | 100 | BILL 6 | 03 |
| GFNS107103C0 |  | GA-FN ; Pilecap-Vertical waterproofing (Zone S1) | 6d | 2010-07-24 A | 2011-01-08 A | GFNS103317C0 SS+60d, GFNS103317C0 FF+7d, GP2S105305C0 | 100% |  | 2011-06-02 | 2011-06-08 |  |  | THERMAL & MOISTURE [1728 h]; THERMAL & MOISTURE [2298 m2]; Cost | GFNS107103C0 |  |  | GA | C | FN | S1 | CT | 071 | 03 |  | B06 | S1 | 03 | R00 | ACF02 |  | 071 | 44 | 44 | 100 | BILL 6 |  |
| GFNS131215C0 |  | GA-FN ; Pilecap-Backfilling & compaction (Zone S1) | 6d | 2010-07-31 A | 2011-01-18 A | GFNS107103C0 | 100% |  | 2011-06-09 | 2011-06-15 |  |  | EXCAVATION & BACKFILLING [1968 h]; EXCAVATION & BACKFILLING [1310 m3]; Cost | GFNS131215C0 |  |  | GA | C | FN | S1 | CT | 312 | 15 |  | B06 | S1 | 03 | R00 | ACF02 |  | 312 | 45 | 45 | 100 | BILL 6 |  |
| GFNS131202C0 |  | GA-FN ; Grade beam-Excavation & Compaction (Zone S1) | 3d | 2010-08-19 A | 2011-01-04 A | GFNS131201C0 SS | 100% |  | 2010-11-01 | 2010-11-03 |  |  | Cost | GFNS131202C0 |  |  | GA | C | FN | S1 | CT | 312 | 02 |  | B06 | S1 | 03 | R00 | ACF02 |  | 312 | 46 | 46 | 100 | BILL 6 |  |
| GFNS103307C0 |  | GA-FN ; Grade beam-Blinding concrete (Zone S1) | 6d | 2010-08-26 A | 2011-01-13 A | GFNS131202C0 | 100% |  | 2010-11-08 | 2010-11-14 |  |  | ANTI-TERMITE [552 h]; CONCRETE [5056 h]; CONCRETE [127 m3]; ANTI-TERMITE [48 m2]; Cost | GFNS103307C0 |  |  | GA | C | FN | S1 | CT | 033 | 07 |  | B06 | S1 | 01 | R00 | ACF02 |  | 033 | 47 | 47 | 100 | BILL 6 | 03 |
| GFNS107105C0 |  | GA-FN ; Grade beam-Horizontal waterproofing (Zone S1) | 6d | 2010-09-09 A | 2011-01-22 A | GFNS103307C0 | 100% |  | 2010-11-18 | 2010-11-24 |  |  | THERMAL & MOISTURE [736 h]; THERMAL & MOISTURE [970 m2]; Cost | GFNS107105C0 |  |  | GA | C | FN | S1 | CT | 071 | 05 |  | B06 | S1 | 02 | R00 | ACF02 |  | 071 | 48 | 48 | 100 | BILL 6 |  |
| GFNS103319C0 |  | GA-FN ; Grade beam-Grade beam concrete (Zone S1) | 45d | 2010-09-14 A | 2011-01-30 A | GFNS103317C0 SS+45d, GFNS107105C0 | 100% |  | 2011-01-30 | 2011-03-22 |  |  | CONCRETE [36856 h]; CONCRETE [927 m3]; Cost | GFNS103319C0 |  |  | GA | C | FN | S1 | CT | 033 | 19 |  | B06 | S1 | 02 | R00 | ACF02 |  | 033 | 49 | 49 | 100 | BILL 6 | 03 |
| GFNS107107C0 |  | GA-FN ; Grade beam-Vertical waterproofing (Zone S1) | 6d | 2010-09-21 A | 2011-02-01 A | GFNS103319C0 SS+14d, GFNS103319C0 FF, GP2S105305C0 | 100% |  | 2011-06-02 | 2011-06-08 |  |  | THERMAL & MOISTURE [1096 h]; THERMAL & MOISTURE [1455 m2]; Cost | GFNS107107C0 |  |  | GA | C | FN | S1 | CT | 071 | 07 |  | B06 | S1 | 03 | R00 | ACF02 |  | 071 | 50 | 50 | 100 | BILL 6 |  |
| GFNS131216C0 |  | GA-FN ; Grade beam-Backfilling & compaction (Zone S1) | 6d | 2010-09-24 A | 2011-02-02 A | GFNS107107C0 | 100% |  | 2011-06-09 | 2011-06-15 |  |  | EXCAVATION & BACKFILLING [1968 h]; EXCAVATION & BACKFILLING [1310 m3]; Cost | GFNS131216C0 |  |  | GA | C | FN | S1 | CT | 312 | 16 |  | B06 | S1 | 03 | R00 | ACF02 |  | 312 | 51 | 51 | 100 | BILL 6 |  |
| GFNS131204C0 |  | GA-FN ; MEP trench-Excavation & Compaction (Zone S1) | 6d | 2010-11-09 A | 2010-12-05 A | GFNS103317C0 SS+60d | 100% |  | 2010-11-04 | 2010-11-11 |  |  | EXCAVATION & BACKFILLING [480 h]; EXCAVATION & BACKFILLING [323 m3]; Cost | GFNS131204C0 |  |  | GA | C | FN | S1 | CT | 312 | 04 |  | B06 | S1 | 04 | R00 | ACF02 |  | 312 | 52 | 52 | 100 | BILL 6 |  |
| GFNS131208C0 |  | GA-FN ; Drainage-Excavation & Compaction (Zone S1) | 6d | 2010-11-11 A | 2011-01-06 A | GFNS103317C0 SS+60d, GP2S105305C0 | 100% |  | 2011-02-23 | 2011-03-02 |  |  | EXCAVATION & BACKFILLING [480 h]; EXCAVATION & BACKFILLING [323 m3]; Cost | GFNS131208C0 |  |  | GA | C | FN | S1 | CT | 312 | 08 |  | B06 | S1 | 04 | R00 | ACF02 |  | 312 | 65 | 65 | 100 | BILL 6 |  |
| GFNS103313C0 |  | GA-FN ; Slab on Grade-Blinding concrete (Zone S1) | 18d | 2010-11-13 A | 2011-02-05 A | GFNS131215C0, GFNS131216C0, GFNS131218C0, GFNS131222C0 | 100% |  | 2011-03-23 | 2011-04-13 |  |  | ANTI-TERMITE [192 h]; CONCRETE [6088 h]; CONCRETE [153 m3]; ANTI-TERMITE [191 m2]; Cost | GFNS103313C0 |  |  | GA | C | FN | S1 | CT | 033 | 13 |  | B06 | S1 | 01 | R00 | ACF02 |  | 033 | 68 | 68 | 100 | BILL 6 | 03 |
| GFNS103309C0 |  | GA-FN ; MEP trench-Blinding concrete (Zone S1) | 40.12d | 2010-11-14 A | 2010-12-15 A | GFNS131204C0 | 100% |  | 2010-11-11 | 2011-01-03 |  |  | ANTI-TERMITE [2584 h]; CONCRETE [360 h]; CONCRETE [9 m3]; ANTI-TERMITE [236 m2]; Cost | GFNS103309C0 |  |  | GA | C | FN | S1 | CT | 033 | 09 |  | B06 | S1 | 01 | R00 | ACF02 |  | 033 | 6 | 6 | 100 | BILL 6 | 03 |
| GFNS131222C0 |  | GA-FN ; Drainage-Backfilling & compaction (Zone S1) | 6d | 2010-11-20 A | 2011-04-19 A | GFNS131224C0 | 100% |  | 2011-03-16 | 2011-03-23 |  |  | EXCAVATION & BACKFILLING [840 h]; EXCAVATION & BACKFILLING [561 m3]; Cost | GFNS131222C0 |  |  | GA | C | FN | S1 | CT | 312 | 22 |  | B06 | S1 | 04 | R00 | ACF02 |  | 312 | 67 | 67 | 100 | BILL 6 |  |
| GFNS107109C0 |  | GA-FN ; MEP trench-Horizontal waterproofing (Zone S1) | 6d | 2010-11-29 A | 2011-01-05 A | GFNS103309C0 SS+6d | 100% |  | 2010-12-09 | 2010-12-16 |  |  | THERMAL & MOISTURE [424 h]; THERMAL & MOISTURE [565 m2]; Cost | GFNS107109C0 |  |  | GA | C | FN | S1 | CT | 071 | 09 |  | B06 | S1 | 02 | R00 | ACF02 |  | 071 | 53 | 53 | 100 | BILL 6 |  |
| GFNS103315C0 |  | GA-FN ; MEP trench-Trench wall concrete (Zone S1) | 24d | 2010-12-01 A | 2011-01-12 A | GFNS103325C0 | 100% |  | 2011-01-08 | 2011-02-05 |  |  | CONCRETE [2464 h]; CONCRETE [62 m3]; Cost | GFNS103315C0 |  |  | GA | C | FN | S1 | CT | 033 | 15 |  | B06 | S1 | 09 | R00 | ACF02 |  | 033 | 55 | 55 | 100 | BILL 6 | 03 |
| GFNS107111C0 |  | GA-FN ; MEP trench-Vertical waterproofing (Zone S1) | 6d | 2010-12-08 A | 2011-01-13 A | GFNS103315C0 | 100% |  | 2011-02-05 | 2011-02-12 |  |  | THERMAL & MOISTURE [1000 h]; THERMAL & MOISTURE [1319 m2]; Cost | GFNS107111C0 |  |  | GA | C | FN | S1 | CT | 071 | 11 |  | B06 | S1 | 03 | R00 | ACF02 |  | 071 | 56 | 56 | 100 | BILL 6 |  |
| GFNS131218C0 |  | GA-FN ; MEP trench-Backfilling & compaction (Zone S1) | 7d | 2010-12-16 A | 2011-02-12 A | GFNS107111C0 | 100% |  | 2011-02-12 | 2011-02-20 |  |  | EXCAVATION & BACKFILLING [840 h]; EXCAVATION & BACKFILLING [561 m3]; Cost | GFNS131218C0 |  |  | GA | C | FN | S1 | CT | 312 | 18 |  | B06 | S1 | 04 | R00 | ACF02 |  | 312 | 59 | 59 | 100 | BILL 6 |  |
| GFNS107113C0 |  | GA-FN ; Slab on Grade Blinding -Horizontal waterproofing (Zone S1) | 12d | 2010-12-18 A | 2011-02-24 A | GFNS103313C0 | 100% |  | 2011-04-05 | 2011-04-19 |  |  | THERMAL & MOISTURE [5464 h]; THERMAL & MOISTURE [7276 m2]; Cost | GFNS107113C0 |  |  | GA | C | FN | S1 | CT | 071 | 13 |  | B06 | S1 | 02 | R00 | ACF02 |  | 071 | 69 | 69 | 100 | BILL 6 |  |
| GFNS103325C0 |  | GA-FN ; MEP trench-Trench Slab concrete (Zone S1) | 18d | 2010-12-19 A | 2011-01-10 A | GFNS107109C0 | 100% |  | 2010-12-16 | 2011-01-08 |  |  | CONCRETE [2464 h]; CONCRETE [62 m3]; Cost | GFNS103325C0 |  |  | GA | C | FN | S1 | CT | 033 | 25 |  | B06 | S1 | 09 | R00 | ACF02 |  | 033 | 54 | 54 | 100 | BILL 6 | 03 |
| GFNS103323C0 |  | GA-FN ; Slab on Grade-SOG concrete (Zone S1) | 24d | 2010-12-21 A | 2011-05-16 A | GFNS107113C0, GFNS131229C0 | 100% |  | 2011-03-22 | 2011-04-18 |  |  | ANTI-TERMITE [4200 h]; CONCRETE [53152 h]; CONCRETE [1337 m3]; ANTI-TERMITE [2836 m2]; Cost | GFNS103323C0 |  |  | GA | C | FN | S1 | CT | 033 | 23 |  | B06 | S1 | 06 | R00 | ACF02 |  | 033 | 70 | 70 | 100 | BILL 6 | 03 |
| GFNS131224C0 |  | GA-FN ; Drainage-Pipe laying (Zone S1) | 12d | 2010-12-21 A | 2011-05-30 A | GFNS131208C0 | 100% |  | 2011-03-02 | 2011-03-16 |  |  | Cost | GFNS131224C0 |  |  | GA | C | FN | S1 | CT | 312 | 24 |  | B06 | S1 | 04 | R00 | ACF02 |  | 312 | 66 | 66 | 100 | BILL 6 |  |
| GFNS131227C0 |  | GA-FN ; MEP trench-Steel supports (Zone S1) | 15d | 2011-04-16 A | 2011-04-27 A | GFNS107111C0 | 100% |  | 2011-02-28 | 2011-03-16 |  |  | Cost | GFNS131227C0 |  |  | GA | C | FN | S1 | CT | 312 | 27 |  | B06 | S1 | 04 | R00 | ACF02 |  | 312 | 57 | 57 | 100 | BILL 6 |  |
| GFNS131229C0 |  | GA-FN ; MEP trench-Grating cover (Zone S1) | 0d | 2011-10-01 | 2011-10-01 | GFNS131227C0 |  |  |  |  | 62.25d | 0d | Cost | GFNS131229C0 |  |  | GA | C | FN | S1 | SW | 312 | 29 | PP | B06 | S1 | 10 | R00 | ACF02 |  | 312 | 58 | 58 |  | BILL 6 |  |

| ID | WBS | Activity | Duration | Start | Finish | Predecessors | Complete | Remaining | Planned start | Planned finish | Total float | Free float | Resources | Change Order # | NEW ACTIVITY ID | change id | RENZ % COMPLETE | CCAD BUILDING(SET) | CCAD PHASE(SET) | CCAD FLOOR(SET) | CCAD ZONE(SET) | CCAD WORK(SET) | CCAD SECTION(SET) | CCAD SERIAL No.(SET) | CCAD CBS(SET) | CCAD BILL(SET) | CCAD HANDOVER(SET) | CCAD TAG(SET) | CCAD REV(SET) | CCADACF (SET) | CCAD SSCF | CCAD DIVISION(SET) | P_811 | P_711 | CCAD RESPONSIBILITY(SET) |
| --- | --- | --- | --- | --- | --- | --- | --- | --- | --- | --- | --- | --- | --- | --- | --- | --- | --- | --- | --- | --- | --- | --- | --- | --- | --- | --- | --- | --- | --- | --- | --- | --- | --- | --- | --- |
|  | S2 | **Zone S2** |  | 2010-05-30 | 2011-10-01 |  |  |  |  |  |  |  |  |  |  |  |  |  |  |  |  |  |  |  |  |  |  |  |  |  |  |  |  |  |  |
| GFNS231201C0 |  | GA-FN ; Pilecap-Excavation & Compaction (Zone S2) | 18d | 2010-05-30 A | 2010-12-30 A | MGNMI00101M0 FS+90d | 100% |  | 2010-11-01 | 2010-11-24 |  |  | EXCAVATION & BACKFILLING [600 h]; EXCAVATION & BACKFILLING [398 m3]; Cost | 40 | 40 | GFNS231201C0 | 100 | GA | C | FN | S2 | CT | 312 | 01 | BILL 6 | B06 | S1 | 03 | R00 | ACF02 | 312 |  |  |  |  |
| GFNS231203C0 |  | GA-FN ; Pilecap-Pilecap treatment (Zone S2) | 15d | 2010-06-02 A | 2011-01-02 A | GFNS231201C0 SS+3d | 100% |  | 2010-11-04 | 2010-11-24 |  |  | Cost | 41 | 41 | GFNS231203C0 | 100 | GA | C | FN | S2 | CT | 312 | 03 | BILL 6 | B06 | S1 | 02 | R00 | ACF02 | 312 |  |  |  |  |
| GFNS203305C0 |  | GA-FN ; Pilecap-Blinding concrete (Zone S2) | 18d | 2010-06-07 A | 2011-01-03 A | GFNS231203C0 SS+6d | 100% |  | 2010-11-11 | 2010-12-05 |  |  | ANTI-TERMITE [6456 h]; CONCRETE [1032 h]; CONCRETE [26 m3]; ANTI-TERMITE [21 m2]; Cost | 42 | 42 | GFNS203305C0 | 100 | GA | C | FN | S2 | CT | 033 | 05 | BILL 6 | B06 | S1 | 01 | R00 | ACF02 | 033 | 03 |  |  |  |
| GFNS207101C0 |  | GA-FN ; Pilecap-Horizontal waterproofing (Zone S2) | 17.88d | 2010-06-14 A | 2011-01-03 A | GFNS203305C0 SS+3d | 100% |  | 2010-11-18 | 2010-12-09 |  |  | THERMAL & MOISTURE [552 h]; THERMAL & MOISTURE [737 m2]; Cost | 43 | 43 | GFNS207101C0 | 100 | GA | C | FN | S2 | CT | 071 | 01 | BILL 6 | B06 | S1 | 02 | R00 | ACF02 | 071 |  |  |  |  |
| GFNS203317C0 |  | GA-FN ; Pilecap-Pilecap concrete (Zone S2) | 90d | 2010-06-21 A | 2011-01-05 A | GFNS207101C0 SS+6d | 100% |  | 2010-11-25 | 2011-03-12 |  |  | CONCRETE [40192 h]; CONCRETE [1011 m3]; Cost | 5 | 5 | GFNS203317C0 | 100 | GA | C | FN | S2 | CT | 033 | 17 | BILL 6 | B06 | S1 | 02 | R00 | ACF02 | 033 | 03 |  |  |  |
| GFNS207103C0 |  | GA-FN ; Pilecap-Vertical waterproofing (Zone S2) | 17.88d | 2010-06-27 A | 2011-01-08 A | GFNS203317C0 SS+35d | 100% |  | 2011-01-08 | 2011-01-27 |  |  | THERMAL & MOISTURE [1296 h]; THERMAL & MOISTURE [1719 m2]; Cost | 44 | 44 | GFNS207103C0 | 100 | GA | C | FN | S2 | CT | 071 | 03 | BILL 6 | B06 | S1 | 03 | R00 | ACF02 | 071 |  |  |  |  |
| GFNS231215C0 |  | GA-FN ; Pilecap-Backfilling & compaction (Zone S2) | 6d | 2010-07-11 A | 2011-01-02 A | GFNS203317C0, GFNS207103C0 SS+6d | 100% |  | 2011-03-14 | 2011-03-20 |  |  | EXCAVATION & BACKFILLING [1480 h]; EXCAVATION & BACKFILLING [980 m3]; Cost | 45 | 45 | GFNS231215C0 | 100 | GA | C | FN | S2 | CT | 312 | 15 | BILL 6 | B06 | S1 | 03 | R00 | ACF02 | 312 |  |  |  |  |
| GFNS231202C0 |  | GA-FN ; Grade beam-Excavation & Compaction (Zone S2) | 9d | 2010-07-13 A | 2011-02-02 A | GFNS231201C0 | 100% |  | 2010-11-25 | 2010-12-05 |  |  | Cost | 46 | 46 | GFNS231202C0 | 100 | GA | C | FN | S2 | CT | 312 | 02 | BILL 6 | B06 | S1 | 03 | R00 | ACF02 | 312 |  |  |  |  |
| GFNS203307C0 |  | GA-FN ; Grade beam-Blinding concrete (Zone S2) | 11.88d | 2010-07-20 A | 2011-02-05 A | GFNS231202C0 | 100% |  | 2010-12-11 | 2010-12-23 |  |  | ANTI-TERMITE [1072 h]; CONCRETE [3664 h]; CONCRETE [92 m3]; ANTI-TERMITE [36 m2]; Cost | 47 | 47 | GFNS203307C0 | 100 | GA | C | FN | S2 | CT | 033 | 07 | BILL 6 | B06 | S1 | 01 | R00 | ACF02 | 033 | 03 |  |  |  |
| GFNS207105C0 |  | GA-FN ; Grade beam-Horizontal waterproofing (Zone S2) | 18d | 2010-07-22 A | 2011-02-06 A | GFNS203307C0 | 100% |  | 2010-12-25 | 2011-01-15 |  |  | THERMAL & MOISTURE [544 h]; THERMAL & MOISTURE [726 m2]; Cost | 48 | 48 | GFNS207105C0 | 100 | GA | C | FN | S2 | CT | 071 | 05 | BILL 6 | B06 | S1 | 02 | R00 | ACF02 | 071 |  |  |  |  |
| GFNS203319C0 |  | GA-FN ; Grade beam-Grade beam concrete (Zone S2) | 75d | 2010-08-05 A | 2011-02-09 A | GFNS203317C0 SS, GFNS207105C0 SS+9d | 100% |  | 2011-01-05 | 2011-04-02 |  |  | CONCRETE [27072 h]; CONCRETE [681 m3]; Cost | 49 | 49 | GFNS203319C0 | 100 | GA | C | FN | S2 | CT | 033 | 19 | BILL 6 | B06 | S1 | 02 | R00 | ACF02 | 033 | 03 |  |  |  |
| GFNS207107C0 |  | GA-FN ; Grade beam-Vertical waterproofing (Zone S2) | 6d | 2010-08-12 A | 2011-02-12 A | GFNS203319C0 SS+30d, GFNS203319C0 FF, GP2S205305C0 | 100% |  | 2011-05-22 | 2011-05-28 |  |  | THERMAL & MOISTURE [816 h]; THERMAL & MOISTURE [1089 m2]; Cost | 50 | 50 | GFNS207107C0 | 100 | GA | C | FN | S2 | CT | 071 | 07 | BILL 6 | B06 | S1 | 03 | R00 | ACF02 | 071 |  |  |  |  |
| GFNS231216C0 |  | GA-FN ; Grade beam-Backfilling & compaction (Zone S2) | 6d | 2010-08-19 A | 2011-05-30 A | GFNS207107C0 | 100% |  | 2011-05-29 | 2011-06-04 |  |  | EXCAVATION & BACKFILLING [1480 h]; EXCAVATION & BACKFILLING [980 m3]; Cost | 51 | 51 | GFNS231216C0 | 100 | GA | C | FN | S2 | CT | 312 | 16 | BILL 6 | B06 | S1 | 03 | R00 | ACF02 | 312 |  |  |  |  |
| GFNS231204C0 |  | GA-FN ; MEP trench-Excavation & Compaction (Zone S2) | 6d | 2010-11-04 A | 2011-02-15 A | GFNS203317C0 SS+30d, GFNS203317C0 FF | 100% |  | 2010-11-21 | 2010-11-27 |  |  | EXCAVATION & BACKFILLING [360 h]; EXCAVATION & BACKFILLING [242 m3]; Cost | 52 | 52 | GFNS231204C0 | 100 | GA | C | FN | S2 | CT | 312 | 04 | BILL 6 | B06 | S1 | 04 | R00 | ACF02 | 312 |  |  |  |  |
| GFNS203309C0 |  | GA-FN ; MEP trench-Blinding concrete (Zone S2) | 27.88d | 2010-11-07 A | 2011-02-17 A | GFNS231204C0 | 100% |  | 2010-11-28 | 2010-12-30 |  |  | ANTI-TERMITE [5320 h]; CONCRETE [240 h]; CONCRETE [6 m3]; ANTI-TERMITE [177 m2]; Cost | 6 | 6 | GFNS203309C0 | 100 | GA | C | FN | S2 | CT | 033 | 09 | BILL 6 | B06 | S1 | 01 | R00 | ACF02 | 033 | 03 |  |  |  |
| GFNS207109C0 |  | GA-FN ; MEP trench-Horizontal waterproofing (Zone S2) | 6d | 2010-11-08 A | 2011-02-20 A | GFNS203309C0 SS+6d | 100% |  | 2010-12-08 | 2010-12-14 |  |  | THERMAL & MOISTURE [328 h]; THERMAL & MOISTURE [423 m2]; Cost | 53 | 53 | GFNS207109C0 | 100 | GA | C | FN | S2 | CT | 071 | 09 | BILL 6 | B06 | S1 | 02 | R00 | ACF02 | 071 |  |  |  |  |
| GFNS203325C0 |  | GA-FN ; MEP trench-Trench Slab concrete (Zone S2) | 18d | 2010-11-09 A | 2011-02-22 A | GFNS203309C0 FF+10d, GFNS207109C0 | 100% |  | 2010-12-21 | 2011-01-12 |  |  | CONCRETE [1824 h]; CONCRETE [46 m3]; Cost | 54 | 54 | GFNS203325C0 | 100 | GA | C | FN | S2 | CT | 033 | 25 | BILL 6 | B06 | S1 | 09 | R00 | ACF02 | 033 | 03 |  |  |  |
| GFNS203315C0 |  | GA-FN ; MEP trench-Trench wall concrete (Zone S2) | 37d | 2010-11-10 A | 2011-02-27 A | GFNS203325C0 | 100% |  | 2011-01-12 | 2011-02-24 |  |  | CONCRETE [1824 h]; CONCRETE [46 m3]; Cost | 55 | 55 | GFNS203315C0 | 100 | GA | C | FN | S2 | CT | 033 | 15 | BILL 6 | B06 | S1 | 09 | R00 | ACF02 | 033 | 03 |  |  |  |
| GFNS231208C0 |  | GA-FN ; Drainage-Excavation & Compaction (Zone S2) | 6d | 2010-12-02 A | 2011-03-03 A | GFNS203317C0 SS+30d, GFNS203317C0 FF | 100% |  | 2010-12-01 | 2010-12-08 |  |  | EXCAVATION & BACKFILLING [360 h]; EXCAVATION & BACKFILLING [242 m3]; Cost | 65 | 65 | GFNS231208C0 | 100 | GA | C | FN | S2 | CT | 312 | 08 | BILL 6 | B06 | S1 | 04 | R00 | ACF02 | 312 |  |  |  |  |
| GFNS231218C0 |  | GA-FN ; MEP trench-Backfilling & compaction (Zone S2) | 7d | 2010-12-04 A | 2011-03-15 A | GFNS207111C0 | 100% |  | 2011-02-14 | 2011-02-22 |  |  | EXCAVATION & BACKFILLING [640 h]; EXCAVATION & BACKFILLING [420 m3]; Cost | 59 | 59 | GFNS231218C0 | 100 | GA | C | FN | S2 | CT | 312 | 18 | BILL 6 | B06 | S1 | 04 | R00 | ACF02 | 312 |  |  |  |  |
| GFNS203313C0 |  | GA-FN ; Slab on Grade-Blinding concrete (Zone S2) | 18d | 2010-12-05 A | 2011-03-09 A | GFNS231215C0, GFNS231216C0, GFNS231218C0, GFNS231222C0 | 100% |  | 2011-02-22 | 2011-03-15 |  |  | ANTI-TERMITE [880 h]; CONCRETE [4456 h]; CONCRETE [112 m3]; ANTI-TERMITE [143 m2]; Cost | 68 | 68 | GFNS203313C0 | 100 | GA | C | FN | S2 | CT | 033 | 13 | BILL 6 | B06 | S1 | 01 | R00 | ACF02 | 033 | 03 |  |  |  |
| GFNS231224C0 |  | GA-FN ; Drainage-Pipe laying (Zone S2) | 9d | 2010-12-09 A | 2011-08-30 A | GFNS231208C0 | 100% |  | 2010-12-09 | 2010-12-19 |  |  | Cost | 66 | 66 | GFNS231224C0 | 95 | GA | C | FN | S2 | CT | 312 | 24 | BILL 6 | B06 | S1 | 04 | R00 | ACF02 | 312 |  | 100 | 95 | PP |
| GFNS207111C0 |  | GA-FN ; MEP trench-Vertical waterproofing (Zone S2) | 6d | 2010-12-12 A | 2011-03-13 A | GFNS203315C0 | 100% |  | 2011-02-07 | 2011-02-14 |  |  | THERMAL & MOISTURE [744 h]; THERMAL & MOISTURE [987 m2]; Cost | 56 | 56 | GFNS207111C0 | 100 | GA | C | FN | S2 | CT | 071 | 11 | BILL 6 | B06 | S1 | 03 | R00 | ACF02 | 071 |  |  |  |  |
| GFNS231222C0 |  | GA-FN ; Drainage-Backfilling & compaction (Zone S2) | 6d | 2010-12-18 A | 2011-03-12 A | GFNS231224C0 | 100% |  | 2010-12-23 | 2010-12-29 |  |  | EXCAVATION & BACKFILLING [640 h]; EXCAVATION & BACKFILLING [420 m3]; Cost | 67 | 67 | GFNS231222C0 | 100 | GA | C | FN | S2 | CT | 312 | 22 | BILL 6 | B06 | S1 | 04 | R00 | ACF02 | 312 |  |  |  |  |
| GFNS207113C0 |  | GA-FN ; Slab on Grade Blinding -Horizontal waterproofing (Zone S2) | 12d | 2011-01-15 A | 2011-05-30 A | GFNS203313C0 | 100% |  | 2011-03-03 | 2011-03-17 |  |  | THERMAL & MOISTURE [4080 h]; THERMAL & MOISTURE [5444 m2]; Cost | 69 | 69 | GFNS207113C0 | 100 | GA | C | FN | S2 | CT | 071 | 13 | BILL 6 | B06 | S1 | 02 | R00 | ACF02 | 071 |  |  |  |  |
| GFNS203323C0 |  | GA-FN ; Slab on Grade-SOG concrete (Zone S2) | 42d | 2011-01-17 A | 2011-03-21 A | GFNS207113C0, GFNS231229C0 | 100% |  | 2011-03-17 | 2011-05-05 |  |  | ANTI-TERMITE [432 h]; CONCRETE [39072 h]; CONCRETE [983 m3]; ANTI-TERMITE [2122 m2]; Cost | 70 | 70 | GFNS203323C0 | 100 | GA | C | FN | S2 | CT | 033 | 23 | BILL 6 | B06 | S1 | 06 | R00 | ACF02 | 033 | 03 |  |  |  |
| GFNS231227C0 |  | GA-FN ; MEP trench-Steel supports (Zone S2) | 18d | 2011-04-17 A | 2011-04-28 A | GFNS207111C0 | 100% |  | 2011-02-28 | 2011-03-21 |  |  | Cost | 57 | 57 | GFNS231227C0 | 100 | GA | C | FN | S2 | CT | 312 | 27 | BILL 6 | B06 | S1 | 04 | R00 | ACF02 | 312 |  |  |  |  |
| GFNS231229C0 |  | GA-FN ; MEP trench-Grating cover (Zone S2) | 10d | 2011-09-05 A | 2011-10-01 | GFNS231227C0 | 100% | 0d | 2011-09-01 | 2011-09-12 | 62.25d | 0d | Cost | 58 | 58 | GFNS231229C0 |  | GA | C | FN | S2 | SW | 312 | 29 | BILL 6 | B06 | S1 | 10 | R00 | ACF02 | 312 |  |  |  | PP |

| ID | WBS | Activity | Type | Duration | Start | Finish | Predecessors | Complete | Remaining | Planned start | Planned finish | Total float | Free float | Constraint | Resources | Actual Cost | change id | RENZ % COMPLETE | Phase | CCAD BUILDING(SET) | CCAD PHASE(SET) | CCAD FLOOR(SET) | CCAD ZONE(SET) | CCAD WORK(SET) | CCAD SECTION(SET) | CCAD SERIAL No.(SET) | Area/ Department | Grids | Are | Weight & Nos | Process | Levels | CCAD CBS(SET) | CCAD BILL(SET) | CCAD HANDOVER(SET) | CCAD TAG(SET) | CCAD REV(SET) | CCADACF (SET) | CCAD CSA | CCAD SSCF | Change Order # | NEW ACTIVITY ID | Claimed This Month | P_811 | P_711 | CCAD DIVISION(SET) | CCAD RESPONSIBILITY(SET) | CCAD (VO) |
| --- | --- | --- | --- | --- | --- | --- | --- | --- | --- | --- | --- | --- | --- | --- | --- | --- | --- | --- | --- | --- | --- | --- | --- | --- | --- | --- | --- | --- | --- | --- | --- | --- | --- | --- | --- | --- | --- | --- | --- | --- | --- | --- | --- | --- | --- | --- | --- | --- |
|  | P3 | **Level Podium 3** |  |  | 2010-10-12 | 2012-10-16 |  |  |  |  |  |  |  |  |  |  |  |  |  |  |  |  |  |  |  |  |  |  |  |  |  |  |  |  |  |  |  |  |  |  |  |  |  |  |  |  |  |  |
|  | 01 | **Structure & Envelopment** |  |  | 2010-10-12 | 2012-03-25 |  |  |  |  |  |  |  |  |  |  |  |  |  |  |  |  |  |  |  |  |  |  |  |  |  |  |  |  |  |  |  |  |  |  |  |  |  |  |  |  |  |  |
| GP3S105101C0 |  | GA-P3 ; Erection of Structural Steel of POD 3 (Zone S1) |  | 9.15d | 2010-10-12 A | 2010-11-29 A | GFNS103317C0, GFNS103319C0 SS+14d | 100% |  | 2010-10-14 | 2010-10-25 |  |  |  | STRUCTURAL STEEL [2822 h]; STRUCTURAL STEEL [94 T(Fe)]; Cost | 4393516.76 | GP3S105101C0 | 100 | Z2 | GA | C | P3 | S1 | ST | 051 | 01 | GA | P12 | R | A6 | EREC | POD2 | BILL 6 | B06 | S1 | 01 | R00 | ACF03 | ST | 051 |  |  |  |  |  |  |  |  |
| GP3S205101C0 |  | GA-P3 ; Erection of Structural Steel of POD 3 (Zone S2) |  | 9.2d | 2010-10-13 A | 2011-01-25 A | GFNS203317C0, OGNMU00005S0 | 100% |  | 2010-10-11 | 2010-10-21 |  |  |  | STRUCTURAL STEEL [2249 h]; STRUCTURAL STEEL [75 T(Fe)]; Cost | 3287456.6 | GP3S205101C0 | 100 | Z2 | GA | C | P3 | S2 | ST | 051 | 01 | GA | P12 | R | A6 | EREC | POD2 | BILL 6 | B06 | S1 | 01 | R00 | ACF03 | ST | 051 |  |  |  |  |  |  |  |  |
| GP3S105103C0 |  | GA-P3 ; Alignment & welding of POD 3 (Zone S1) |  | 5d | 2010-11-01 A | 2010-12-09 A | GP3S105101C0 | 100% |  | 2011-01-06 | 2011-01-12 |  |  |  | STRUCTURAL STEEL [544 h]; Cost | 488168.53 | GP3S105103C0 | 100 | Z2 | GA | C | P3 | S1 | ST | 051 | 03 | GA | P12 | R | A6 | EREC | POD2 | BILL 6 | B06 | S1 | 02 | R00 | ACF03 | ST | 051 |  |  |  |  |  |  |  |  |
| GP3S205103C0 |  | GA-P3 ; Alignment & welding of POD 3 (Zone S2) |  | 5d | 2010-11-01 A | 2011-02-15 A | GP3S205101C0 | 100% |  | 2011-01-18 | 2011-01-23 |  |  |  | STRUCTURAL STEEL [407 h]; Cost | 365272.96 | GP3S205103C0 | 100 | Z2 | GA | C | P3 | S2 | ST | 051 | 03 | GA | P12 | R | A6 | EREC | POD2 | BILL 6 | B06 | S1 | 02 | R00 | ACF03 | ST | 051 |  |  |  |  |  |  |  |  |
| GP3S107807C0 |  | GA-P3 ; Cementitious Fire Proofing at POD 3 (Zone S1) |  | 12d | 2011-02-08 A | 2011-05-30 A | GFNS103323C0, GP2S103399C0 | 100% |  | 2011-03-12 | 2011-03-26 |  |  |  | CEMENTITIOUS FIREPROOFING [1958 h]; CEMENTITIOUS FIREPROOFING [3916 m2]; Cost |  | GP3S107807C0 | 100 | Z2 | GA | C | P3 | S1 | ST | 078 | 07 | GA | P12 | R | A6 | FIRE | POD2 | BILL 6 | B06 | S1 | 04 | R00 | ACF03 | ST | 078 |  |  |  |  |  |  |  |  |
| GP3S207807C0 |  | GA-P3 ; Cementitious Fire Proofing at POD 3 (Zone S2) |  | 10d | 2011-03-13 A | 2011-04-28 A | GFNS203323C0, GP2S203399C0 | 100% |  | 2011-04-19 | 2011-05-01 |  |  |  | CEMENTITIOUS FIREPROOFING [1465 h]; CEMENTITIOUS FIREPROOFING [2930 m2]; Cost |  | GP3S207807C0 | 100 | Z2 | GA | C | P3 | S2 | ST | 078 | 07 | GA | P12 | R | A6 | FIRE | POD2 | BILL 6 | B06 | S1 | 04 | R00 | ACF03 | ST | 078 |  |  |  |  |  |  |  |  |
| GP3CO04001C0 |  | GA-P3 ; Blockworks (Common Zone) |  | 24d | 2011-04-10 A | 2011-08-14 A | GFNS103323C0, GFNS203323C0 | 100% |  | 2011-04-19 | 2011-05-17 |  |  |  | BLOCKWORKS [1474 h]; BLOCKWORKS [421 m2]; Cost |  | GP3CO04001C0 | 25 |  | GA | C | P3 | CO | BL | 040 | 01 |  |  |  |  |  |  | BILL 6 | B06 | S1 | BL | R00 | ACF06 |  | 040 | 73 | 73 | 70281.4 | 100 | 99 | 04 | PP |  |
| GP3CO04404C0 |  | GA-P3 ; C5 & C7 Bracket (Common Zone) |  | 36d | 2011-04-12 A | 2011-11-02 | GP3S107807C0, GP3S207807C0, PP1S903371C0 FS+28d | 30% | 25.2d | 2011-09-12 | 2011-10-24 | 198.5d | 0d |  | FACADE CURTAIN WALL 3 [553.9 h]; Cost |  | GP3CO04404C0 | 20 |  | GA | C | P3 | CO | FA | 044 | 04 |  |  |  |  |  |  | BILL 6 | B06 | S1 | FC5 | R00 | ACF05 | FA | 044 |  |  | 7579.49 |  |  |  | PP | CP |
| GP3CO04407C0 |  | GA-P3 ; S2 Bracket (Common Zone) |  | 29d | 2011-05-02 A | 2011-06-29 A | GP3S107807C0, GP3S207807C0 | 100% |  | 2011-06-13 | 2011-07-17 |  |  |  | FACADE NATURAL STONE PANEL [342 h]; Cost |  | GP3CO04407C0 | 15 |  | GA | C | P3 | CO | FA | 044 | 07 |  |  |  |  |  |  | BILL 6 | B06 | S1 | FS2 | R00 | ACF05 | FA | 044 |  |  | 136038.08 |  |  |  |  |  |
| GP3S005101C0 |  | GA-P3 ; Secondary Steel for Mech Trenches (Zone S2) |  | 1.88d | 2011-06-02 A | 2011-08-30 A | GP3S207807C0 | 100% |  | 2011-07-13 | 2011-07-14 |  |  |  | STRUCTURAL STEEL [5 T(Fe)]; Cost | 4393516.76 | GP3S105101C0 |  | Z2 | GA | C | P3 | S2 | SW | 055 | 01 | GA | P12 | R | A6 | EREC | POD2 | BILL 6 | B06 |  | 01 | R00 | ACF03 |  | 055 |  |  | 402646.5 | 100 | 94.67 |  | PP |  |
| GP3CO04003C0 |  | GA-P3 ; Plaster to Blockwork (Common Zone) |  | 24d | 2011-07-10 A | 2011-08-14 A | GP3CO04001C0 | 100% |  | 2011-07-14 | 2011-08-11 |  |  |  | BLOCKWORKS [45 h]; Cost |  | GP3CO04003C0 |  |  | GA | C | P3 | CO | BL | 040 | 03 |  |  |  |  |  |  | BILL 6 | B06 | S1 | BL | R00 | ACF06 |  | 040 |  |  |  | 100 | 97 |  | PP |  |
| GP3CO04411C0 |  | GA-P3 ; S2 External Partition (Common Zone) |  | 59.88d | 2011-07-10 A | 2011-07-26 A | GP3CO04407C0 SS+10d, GP3GN01701C0 FF | 100% |  | 2011-07-13 | 2011-09-22 |  |  |  | PARTITIONS [335.38 m]; PARTITIONS [835.3 h]; Cost |  | GP3CO04411C0 |  |  | GA | C | P3 | CO | FA | 044 | 11 |  |  |  |  |  |  | BILL 6 | B06 | S1 | FS2 | R00 | ACF05 | FA | 044 |  |  | 74687.57 |  |  |  |  |  |
| GP3GN01701C0 |  | GA-P3 ; Temporary Enclosure | level of effort | 124.6d | 2011-07-10 A | 2012-03-25 | GP3PA09203C0 SS, GP3M109203C0 SS |  | 144.05d | 2011-07-13 | 2011-12-13 | 255.95d | 0d |  | Labor General [0.6 h]; Cost |  |  |  |  | GA | C | P3 | GEN | FA | GEN |  |  |  |  |  |  |  |  | B06 |  | TE | R00 | ACF05 | FA | 010 |  |  |  | 26.16 | 2.89 |  | PP |  |
| GP3CO04407C10 |  | GA-P3 ; CW-1 Bracket (Common Zone) |  | 42d | 2011-11-09 | 2011-12-29 | GP3CO04404C0 SS, PP1S903371C0 FS+56d |  |  |  |  | 291d | 0d |  | FACADE CASCADE WALL [126.5 h]; Cost |  | GP3CO04407C0 |  |  | GA | C | P3 | CO | FA | 044 | 07 |  |  |  |  |  |  | BILL 6 | B06 | S1 | CW | R00 | ACF05 | FA | 044 |  |  |  |  |  |  | PP |  |
| GP3CO04405C1 |  | GA-P3 ; Louvers Bracket (Common Zone) |  | 30d | 2011-11-10 | 2011-12-18 | PP1S903372C0 FS+28d |  |  |  |  | 289.8d | 0d |  | FACADE SAND LOUVERS [422.3 h]; Cost |  | I05CO04405C0 |  |  | GA | C | P3 | CO | FA | 044 | 05 |  |  |  |  |  |  | BILL 6 | B06 | S2 | FSL | R00 | ACF05 | FA | 044 |  |  |  |  |  |  | PP |  |
| GP3CO04411C10 |  | GA-P3 ; CW-1 External Partition (Common Zone) |  | 42d | 2011-11-23 | 2012-01-14 | GP3CO04407C10 SS+12d, GP3GN01701C0 FF |  |  |  |  | 315d | 0d |  | FACADE CASCADE WALL [126.5 h]; Cost |  | GP3CO04411C0 |  |  | GA | C | P3 | CO | FA | 044 | 11 |  |  |  |  |  |  | BILL 6 | B06 | S1 | CW | R00 | ACF05 | FA | 044 |  |  |  |  |  |  | PP |  |
| GP3CO04410C10 |  | GA-P3 ; CW-1 Stone Panel (Common Zone) |  | 42d | 2011-12-10 | 2012-01-28 | GP3CO04411C10 SS+12d |  |  |  |  | 315d | 178.6d |  | FACADE CASCADE WALL [589.7 h]; Cost |  | GP3CO04410C0 |  |  | GA | C | P3 | CO | FA | 044 | 10 |  |  |  |  |  |  | BILL 6 | B06 | S1 | CW | R00 | ACF05 | FA | 044 |  |  |  |  |  |  | PP |  |
| GP3CO04410C0 |  | GA-P3 ; S2 Stone Panel (Common Zone) |  | 60d | 2011-12-15 | 2012-02-25 | GP3CO04411C0 SS, GP3CO04411C0 FF |  |  |  |  | 30.25d | 0d | start on or after 2011-12-15 | FACADE CASCADE WALL [547.2 h]; FACADE NATURAL STONE PANEL [820.8 h]; FACADE CASCADE WALL [285.71 m2]; FACADE NATURAL STONE PANEL [428.57 m2]; FACADE TOTAL QUANTITY m2 [714.29 m2]; Cost |  | GP3CO04410C0 |  |  | GA | C | P3 | CO | FA | 044 | 10 |  |  |  |  |  |  | BILL 6 | B06 | S1 | FS2 | R00 | ACF05 | FA | 044 |  |  |  |  |  |  | PP |  |
| GP3CO04417C1 |  | GA-P3 ; Louvers transom & mullion (Common Zone) |  | 30d | 2011-12-18 | 2012-01-23 | GP3CO04405C1 |  |  |  |  | 289.8d | 0d |  | FACADE SAND LOUVERS [1689.2 h]; Cost |  | I05CO04417C0 |  |  | GA | C | P3 | CO | FA | 044 | 17 |  |  |  |  |  |  | BILL 6 | B06 | S2 | FSL | R00 | ACF05 | FA | 044 |  |  |  |  |  |  | PP |  |
| GP3CO04413C0 |  | GA-P3 ; C5 & C7 Transom & Mullion (Common Zone) |  | 60d | 2012-01-14 | 2012-03-25 | GP3CO04404C0 SS+18d, PP1S903371C0 FS+52d, PP1SX03371C0 FS+52d, PP1S903372C0 FS+52d, PP1SX03372C0 FS+52d |  |  |  |  | 213.95d | 0d |  | FACADE CURTAIN WALL 3 [2215.1 h]; Cost |  | GP3CO04413C0 |  |  | GA | C | P3 | CO | FA | 044 | 13 |  |  |  |  |  |  | BILL 6 | B06 | S1 | FC5 | R00 | ACF05 | FA | 044 |  |  |  |  |  |  | PP |  |
| GP3CO04413C1 |  | GA-P3 ; Louvers installation (Common Zone) |  | 30d | 2012-01-23 | 2012-02-28 | GP3CO04417C1 |  |  |  |  | 289.8d | 141.8d |  | FACADE STEEL GRILL [704.2 h]; Cost |  | I05CO04413C0 |  |  | GA | C | P3 | CO | FA | 044 | 13 |  |  |  |  |  |  | BILL 6 | B06 | S2 | FSL | R00 | ACF05 | FA | 044 |  |  |  |  |  |  | PP |  |
| GP3CO04405C0 |  | GA-P3 ; C5 & C7 Glazing (Common Zone) |  | 42d | 2012-02-05 | 2012-03-25 | GP3CO04413C0 SS+18d, GP3GN01701C0 FF |  |  |  |  | 213.95d | 0d |  | FACADE CURTAIN WALL 3 [1550.3 h]; FACADE CURTAIN WALL 3 [378 m2]; FACADE TOTAL QUANTITY m2 [378 m2]; Cost |  | GP3CO04405C0 |  |  | GA | C | P3 | CO | FA | 044 | 05 |  |  |  |  |  |  | BILL 6 | B06 | S1 | FC5 | R00 | ACF05 | FA | 044 |  |  |  |  |  |  | PP |  |

| ID | WBS | Activity | Duration | Start | Finish | Predecessors | Complete | Remaining | Planned start | Planned finish | Total float | Free float | Resources | Cost | Actual cost | change id | RENZ % COMPLETE | July2011 Target% Complete | P_811 | P_711 | CCAD BUILDING(SET) | CCAD PHASE(SET) | CCAD FLOOR(SET) | CCAD ZONE(SET) | CCAD WORK(SET) | CCAD SECTION(SET) | CCAD SERIAL No.(SET) | CCAD SUB ZONE MEP(SET) | CCAD RESPONSIBILITY(SET) | CCAD CBS(SET) | CCAD BILL(SET) | CCAD HANDOVER(SET) | CCAD TAG(SET) | CCAD REV(SET) | CCADACF (SET) | CCAD CSA | CCAD SSCF | Act Selector % | user_number8 | user_integer1 | user_integer2 | user_number7 | Claimed This Month | Change Order # | NEW ACTIVITY ID | U% | CCAD DIVISION(SET) | CCAD MEQ | R3 Finish |
| --- | --- | --- | --- | --- | --- | --- | --- | --- | --- | --- | --- | --- | --- | --- | --- | --- | --- | --- | --- | --- | --- | --- | --- | --- | --- | --- | --- | --- | --- | --- | --- | --- | --- | --- | --- | --- | --- | --- | --- | --- | --- | --- | --- | --- | --- | --- | --- | --- | --- |
|  | 02 | **Public Area ( Elev.Lobby & Corridors )** |  | 2011-02-19 | 2012-10-16 |  |  |  |  |  |  |  |  |  |  |  |  |  |  |  |  |  |  |  |  |  |  |  |  |  |  |  |  |  |  |  |  |  |  |  |  |  |  |  |  |  |  |  |  |
| GP3PA21111C0 |  | GA-P3 ; 1st Fix, Inst of Sprinkler main pipe (Public Area) | 200d | 2011-02-19 A | 2011-10-04 | GP3PA22005C0 SS+9d, GP3PA23001C0 SS | 98% | 4d | 2011-06-26 | 2012-02-26 | 78.79d | 0d | MECHANICAL [876 h]; Cost [29558 AED] | 29,557.99 | 28,966.83 | S08PA21111C0 | 95 | 100 | 98 | 95 | GA | C | P3 | PA | ME | 211 | 11 | 1S | PP | BILL 6 | B06 | S1 | 1F | R00 | ACF04 | MEP | 211 | M1F |  |  |  |  |  |  |  |  |  |  |  |
| GP3PA23001C0 |  | GA-P3 ; 1st Fix, Inst. of Supports for MEP (Public Area) | 200d | 2011-02-19 A | 2011-10-11 | GP3S107807C0, GP3S207807C0 | 95% | 10d | 2011-04-09 | 2011-12-07 | 78.79d | 0d | MECHANICAL [789.6 h]; Cost [28834.6 AED] | 28,834.58 | 27,392.85 | S08PA23001C0 | 100 |  |  |  | GA | C | P3 | PA | ME | 230 | 01 | 1S |  | BILL 6 | B06 | S1 | 1F | R00 | ACF04 | MEP | 230 | M1F |  |  |  |  |  |  |  |  |  |  |  |
| GP3PA26001C0 |  | GA-P3 ; 1st Fix, Inst of Trunking/Conduiting (Public Area) | 156d | 2011-02-19 A | 2011-10-27 | GP3PA23001C0 SS, GP3S107807C0, GP3S207807C0 | 85% | 23.4d | 2011-05-07 | 2011-11-12 | 78.79d | 0d | ELECTRICAL [630 h]; Cost [24536.7 AED] | 24,536.7 | 20,856.19 | S08PA26001C0 | 30 | 65 | 75 | 60 | GA | C | P3 | PA | ME | 260 | 01 | 1S | PP | BILL 6 | B06 | S1 | 1F | R00 | ACF04 | MEP | 260 | M1F | 0 | 0 | 0 | 0 | 26822.25 |  |  |  |  |  |  |
| GP3PA27010C0 |  | GA-P3 ; 1st Fix, Inst of Trunking for ELV system (Public Area) | 200d | 2011-02-19 A | 2011-10-11 | GP3PA23001C0 SS, GP3PA26001C0 SS+9d, GP3S107807C0, GP3S207807C0 | 95% | 10d | 2011-05-17 | 2012-01-16 | 78.79d | 0d | ELECTRICAL [1467.6 h]; Cost [31671.7 AED] | 31,671.72 | 30,088.14 | S08PA27010C0 | 30 | 95 | 95 | 50 | GA | C | P3 | PA | ME | 270 | 10 | 1S | PP | BILL 6 | B06 | S1 | 1F | R00 | ACF04 | MEP | 270 | M1F |  |  |  |  | 56816.4 |  |  |  |  |  |  |
| GP3PA22019C0 |  | GA-P3 ; 1st Fix, Inst of Drainage pipe (ceiling) (Public Area) | 156d | 2011-04-05 A | 2011-11-09 | GP3PA23001C0 SS, GP3PA26013C0 SS+9d | 80% | 31.2d | 2011-06-06 | 2011-12-13 | 78.79d | 0d | PLUMBING [823.2 h]; Cost [35208.5 AED] | 35,208.51 | 28,166.81 | S08PA22019C0 | 60 | 75 | 75 | 65 | GA | C | P3 | PA | ME | 220 | 19 | 1S | PP | BILL 6 | B06 | S1 | 1F | R00 | ACF04 | MEP | 220 | M1F | 0 | 0 | 0 | 0 | 2625.55 |  |  |  |  |  |  |
| GP3PA09201C0 |  | GA-P3 ; Metal Studs (Public Area) | 12d | 2011-04-09 A | 2011-10-01 | GP3PA23001C0 SS+12d | 95% | 0.6d | 2011-05-05 | 2011-05-19 | 130.69d | 0d | PARTITIONS [2743 h]; PARTITIONS - Metal Studs [380 m]; Cost |  |  | S08PA09201C0 | 20 |  | 90 | 60 | GA | C | P3 | PA | PT | 092 | 01 |  | PP | BILL 6 | B06 | S1 | 1F | R00 | ACF06 | GP | 092 | PMS | 0 | 0 | 0 | 0 |  | 313 | 944 |  |  |  |  |
| GP3PA26013C0 |  | GA-P3 ; 1st Fix, Inst of Cable Tray (Public Area) | 120d | 2011-04-17 A | 2011-10-20 | GP3PA23001C0 SS, GP3PA27010C0 SS+9d, GP3S107807C0, GP3S207807C0 | 85% | 18d | 2011-05-26 | 2011-10-16 | 78.79d | 0d | ELECTRICAL [2011.2 h]; Cost [13923.6 AED] | 13,923.6 | 11,835.06 | S08PA26013C0 | 30 | 65 | 65 | 50 | GA | C | P3 | PA | ME | 260 | 13 | 1S | PP | BILL 6 | B06 | S1 | 1F | R00 | ACF04 | MEP | 260 | M1F | 0 | 0 | 0 | 0 | 46045.3 |  |  |  |  |  |  |
| GP3PA21117C0 |  | GA-P3 ; 1st Fix, Inst of Sprinkler branch pipe (Public Area) | 200d | 2011-04-19 A | 2011-10-16 | GP3PA09201C0, GP3PA21111C0 | 95% | 10d | 2011-08-06 | 2012-04-05 | 190d | 111.21d | MECHANICAL [931.2 h]; Cost [50874.3 AED] | 50,874.31 | 48,330.6 | S08PA21117C0 | 95 |  |  |  | GA | C | P3 | PA | ME | 211 | 17 | 1S |  | BILL 6 | B06 | S1 | 1F | R00 | ACF04 | MEP | 211 | M1F |  |  |  |  | 2949.19 |  |  |  |  |  |  |
| GP3PA23017C0 |  | GA-P3 ; 1st Fix, Inst of CHW pipe (Public Area) | 78d | 2011-04-20 A | 2011-11-22 | GP3PA21111C0 SS+9d, GP3PA23001C0 SS, UP3GN03300R02 | 45% | 42.9d | 2011-06-26 | 2011-09-27 | 78.79d | 0d | MECHANICAL [1650 h]; Cost [90112.2 AED] | 90,112.24 | 40,550.51 | S08PA23017C0 | 45 | 85 |  |  | GA | C | P3 | PA | ME | 230 | 17 | 1S | PP | BILL 6 | B06 | S1 | 1F | R00 | ACF04 | MEP | 230 | M1F |  |  |  |  | 36584.1 |  |  |  |  |  |  |
| GP3PA23023C0 |  | GA-P3 ; 1st Fix, Inst of Main Ducting (Public Area) | 132d | 2011-04-21 A | 2011-12-19 | GP3PA23001C0 SS, GP3PA23017C0 FF+21d | 70% | 39.6d | 2011-07-05 | 2011-12-13 | 96.79d | 0d | MECHANICAL [7458 h]; Cost [407301 AED] | 407,300.87 | 285,110.61 | S08PA23023C0 | 35 | 75 | 70 | 50 | GA | C | P3 | PA | ME | 230 | 23 | 1S | PP | BILL 6 | B06 | S1 | 1F | R00 | ACF04 | MEP | 230 | M1F | 0 | 0 | 0 | 0 | 70862.7 |  |  |  |  |  |  |
| GP3PA22005C0 |  | GA-P3 ; 1st Fix, Inst of Water supply pipe (ceiling) (Public Area) | 72d | 2011-05-15 A | 2011-11-23 | GP3PA22019C0 SS+7d, GP3PA23001C0 SS | 40% | 43.2d | 2011-06-27 | 2011-09-21 | 78.79d | 0d | PLUMBING [500.4 h]; Cost [27361.7 AED] | 27,361.72 | 10,944.69 | S08PA22005C0 | 55 | 85 |  |  | GA | C | P3 | PA | ME | 220 | 05 | 1S | PP | BILL 6 | B06 | S1 | 1F | R00 | ACF04 | MEP | 220 | M1F | 0 | 0 | 0 | 0 |  |  |  |  |  |  |  |
| GP3PA26005C0 |  | GA-P3 ; 2nd Fix, Wiring for Power/Lighting/Emergency (Public Area) | 60d | 2011-06-07 A | 2012-06-24 | GP3PA26007C0 | 20% | 48d | 2011-10-03 | 2011-12-18 | 78.79d | 0d | ELECTRICAL [242.4 h]; Cost [12852.6 AED] | 12,852.56 | 2,570.51 | S08PA26005C0 |  | 45 |  |  | GA | C | P3 | PA | ME | 260 | 05 | 2n | PP | BILL 6 | B06 | S1 | 2F | R00 | ACF07 | MEP | 260 |  |  |  |  |  | 7159.02 |  |  |  |  |  |  |
| GP3PA09203C0 |  | GA-P3 ; Partitions early wall & 1st face (Public Area) | 33d | 2011-07-10 A | 2011-10-03 | GP3PA09201C0 | 95% | 1.65d | 2011-07-13 | 2011-08-20 | 167.44d | 88.65d | PARTITIONS [380 m]; PARTITIONS [2128 h]; Cost |  |  | S08PA09203C0 |  |  | 75 | 50 | GA | C | P3 | PA | PT | 092 | 03 |  | PP | BILL 6 | B06 | S1 | 2F | R00 | ACF06 | GP | 092 | P1F | 0 | 0 | 0 | 0 |  | 314 | 945 |  |  |  |  |
| GP3PA23015C0 |  | GA-P3 ; 2nd Fix, Insulation of CHW pipe & Duct (Public Area) | 60d | 2011-07-10 A | 2012-02-08 | GP3PA23017C0, GP3PA23023C0 | 30% | 42d | 2011-09-13 | 2011-11-27 | 98.1d | 19.31d | MECHANICAL [1699.2 h]; Cost [92761.9 AED] | 92,761.87 | 27,828.56 | S08PA23015C0 |  | 65 |  |  | GA | C | P3 | PA | ME | 230 | 15 | 2n | PP | BILL 6 | B06 | S1 | 2F | R00 | ACF07 | MEP | 230 |  |  |  |  |  | 11431.52 |  |  |  |  |  |  |
| GP3PA26009C0 |  | GA-P3 ; 2nd Fix, Inst of Wall conduites (Public Area) | 60d | 2011-07-10 A | 2011-10-29 | GP3PA09201C0 | 60% | 24d | 2011-07-13 | 2011-09-22 | 145.09d | 14.4d | ELECTRICAL [451.2 h]; Cost [24536.7 AED] | 24,536.7 | 14,722.02 | S08PA26009C0 |  | 25 | 35 | 10 | GA | C | P3 | PA | ME | 260 | 09 | 2n | PP | BILL 6 | B06 | S1 | 2F | R00 | ACF07 | MEP | 260 |  | 0 | 0 | 0 | 0 |  |  |  |  |  |  |  |
| GP3PA09205C0 |  | GA-P3 ; Partitions Closing (Public Area) | 36.11d | 2011-08-03 A | 2012-03-03 | GAFOA09208C1 FF, GP3PA01005C0, GP3PA09203C0, GP3PA22005C0, GP3PA22019C0, GAFCI22001R02 FS+58d, GP3PA08103C0 FF, GP3PA21117C0 FF, GP3PA23023C0, GP3PA23017C0 FF, GP3PA23015C0 FF, GP3PA23009C0, GP3PA23008C0 | 5% | 34.31d | 2012-02-02 | 2012-03-17 | 78.79d | 0d | PARTITIONS [380 m]; PARTITIONS [2731 h]; Cost |  |  | S08PA09205C0 |  |  | 5 | 0 | GA | C | P3 | PA | PT | 092 | 05 |  | PP | BILL 6 | B06 | S1 | FF | R00 | ACF06 | GP | 092 | P2F | 0 | 0 | 0 | 0 |  | 315 | 946 | 5 |  |  |  |
| GP3PA22011C0 |  | GA-P3 ; 2nd Fix, Drainage/Water pipe (wall) (Public Area) | 48d | 2011-09-05 A | 2011-11-17 | GP3PA09201C0 | 20% | 38.4d | 2011-09-13 | 2011-11-12 | 130.69d | 0d | PLUMBING [644.4 h]; Cost [35208.5 AED] | 35,208.51 | 7,041.7 | S08PA22011C0 |  | 25 |  |  | GA | C | P3 | PA | ME | 220 | 11 | 2n | PP | BILL 6 | B06 | S1 | 2F | R00 | ACF07 | MEP | 220 |  |  |  |  |  |  |  |  |  |  |  |  |
| GP3PA23008C0 |  | GA-P3 ; 1st Fix, Inst of VCD's/FD's (Public Area) | 54d | 2011-09-05 A | 2011-12-29 | GP3PA23023C0 SS | 10% | 48.6d | 2011-10-30 | 2012-01-08 | 96.79d | 18d | MECHANICAL [673.2 h]; Cost [36751.3 AED] | 36,751.29 | 3,675.13 | S08PA23008C0 |  | 50 |  |  | GA | C | P3 | PA | ME | 230 | 08 | 1S | PP | BILL 6 | B06 | S1 | 1F | R00 | ACF04 | MEP | 230 | M1F |  |  |  |  |  |  |  |  |  |  |  |
| GP3PA27001C0 |  | GA-P3 ; 1st Fix, Wiring/ Cabling work (Public Area) | 54d | 2011-10-27 | 2012-01-05 | GP3PA26001C0, GP3PA26013C0, GP3PA27010C0 |  |  |  |  | 174.6d | 95.81d | ELECTRICAL [242.4 h]; Cost |  |  | S08PA27001C0 |  | 25 |  |  | GA | C | P3 | PA | ME | 270 | 01 | 1S | PP | BILL 6 | B06 | S1 | 1F | R00 | ACF04 | MEP | 270 | M1F |  |  |  |  |  |  |  |  |  |  |  |
| GP3PA01005C0 |  | GA-P3 ; 2nd, Wall Inspection by Consultant (Public Area) | 0d | 2011-11-19 | 2011-11-19 | GP3PA22011C0, GP3PA26009C0 |  |  |  |  | 130.69d | 51.9d | Cost |  |  | S08PA01005C0 |  |  |  |  | GA | C | P3 | PA | ME | 010 | 05 | 2n | PP | BILL 6 | B06 | S1 | WI | R00 | ACF07 | MEP | 010 |  |  |  |  |  |  |  |  |  |  |  |  |
| GP3PA23009C0 |  | GA-P3 ; 2nd Fix, Inst of VAV'S CHW connection (Public Area) | 48d | 2011-11-22 | 2012-01-21 | GP3PA23017C0 |  |  |  |  | 78.79d | 0d | MECHANICAL [788.4 h]; Cost |  |  | S08PA23009C0 |  | 25 |  |  | GA | C | P3 | PA | ME | 230 | 09 | 2n | PP | BILL 6 | B06 | S1 | 2F | R00 | ACF07 | MEP | 230 |  |  |  |  |  |  |  |  |  |  |  |  |
| GP3PA08103C0 |  | GA-P3 ; Door Frames (Public Area) | 36d | 2012-01-05 | 2012-02-16 | GP3PA09201C0, GP3M108101C0 SS+3d, GNHE08101C0 FS+130d |  |  |  |  | 91d | 12.21d | ASSORTED DOORS [182 h]; Cost |  |  | S08PA08103C0 |  |  |  |  | GA | C | P3 | PA | DO | 081 | 03 |  | PP | BILL 6 | B06 | S1 | DF | R00 | ACF06 |  | 081 |  |  |  |  |  |  | 316 | 947 |  | 08 |  |  |
| GP3PA09901C0 |  | GA-P3 ; Wall Prime & 1st coat (Public Area) | 36d | 2012-03-03 | 2012-04-14 | GP3PA09205C0 |  |  |  |  | 90.79d | 0d | WALL PAINT [182 h]; WALL PAINT [225 m2]; Cost |  |  | S08PA09901C0 |  |  |  |  | GA | C | P3 | PA | PA | 099 | 01 |  | PP | BILL 6 | B06 | S1 | 01 | R00 | ACF06 |  | 099 |  |  |  |  |  |  | 328 | 956 |  |  |  |  |
| GP3PA23011C0 |  | GA-P3 ; 2nd Fix, Inst of Equipment (FCU,FAN) (Public Area) | 48d | 2012-03-03 | 2012-04-28 | GP3PA09205C0 |  |  |  |  | 78.79d | 0d | MECHANICAL [406.8 h]; Cost |  |  | S08PA23011C0 |  |  |  |  | GA | C | P3 | PA | ME | 230 | 11 | 2n | PP | BILL 6 | B06 | S1 | 2F | R00 | ACF04 | MEP | 230 |  |  |  |  |  |  |  |  |  |  | H |  |
| GP3PA26007C0 |  | GA-P3 ; 2nd Fix, Cable Pulling (Public Area) | 48d | 2012-03-03 | 2012-04-28 | GP3PA09201C0, GP3PA09205C0 |  |  |  |  | 78.79d | 0d | ELECTRICAL [1117.2 h]; Cost |  |  | S08PA26007C0 |  | 25 |  |  | GA | C | P3 | PA | ME | 260 | 07 | 2n | PP | BILL 6 | B06 | S1 | 2F | R00 | ACF07 | MEP | 260 |  |  |  |  |  |  |  |  |  |  |  |  |
| GP3PA26011C0 |  | GA-P3 ; 2nd Fix, Inst of Equipment (DB) (Public Area) | 60d | 2012-03-03 | 2012-05-12 | GP3PA09205C0 |  |  |  |  | 108.79d | 0d | ELECTRICAL [524.4 h]; Cost |  |  | S08PA26011C0 |  |  |  |  | GA | C | P3 | PA | ME | 260 | 11 | 2n | PP | BILL 6 | B06 | S1 | 2F | R00 | ACF04 | MEP | 260 |  |  |  |  |  |  |  |  |  |  | E |  |
| GP3PA26053C0 |  | GA-P3 ; 2nd Fix, Wiring / Cabling (Public Area) | 48d | 2012-03-03 | 2012-04-28 | GP3PA09205C0 |  |  |  |  | 156.79d | 78d | ELECTRICAL [242.4 h]; Cost |  |  | S08PA26053C0 |  | 25 |  |  | GA | C | P3 | PA | ME | 260 | 53 | 2n | PP | BILL 6 | B06 | S1 | 2F | R00 | ACF07 | MEP | 260 |  |  |  |  |  |  | 389 | 977 |  |  |  |  |
| GP3PA27020C0 |  | GA-P3 ; 2nd Fix, Inst of ELV Equipment (Panels) (Public Area) | 48d | 2012-03-03 | 2012-04-28 | GP3PA09205C0 |  |  |  |  | 120.79d | 12d | ELECTRICAL [1618.8 h]; Cost |  |  | S08PA27020C0 |  |  |  |  | GA | C | P3 | PA | ME | 270 | 20 | 2n | PP | BILL 6 | B06 | S1 | 2F | R00 | ACF04 | MEP | 270 |  |  |  |  |  |  |  |  |  |  | E |  |
| GP3PA05501C0 |  | GA-P3 ; Handrails & balustrade (Public Area) | 36d | 2012-04-14 | 2012-05-26 | GP3PA09901C0, GAFT1805509C0, GAFT2005509C0, GAFT2105509C0 |  |  |  |  | 179.29d | 54d | SECONDARY STEEL [1313 h]; Cost |  |  | S08PA05501C0 |  |  |  |  | GA | C | P3 | PA | SW | 055 | 01 |  | PP | BILL 6 | B06 | S1 | 01 | R00 | ACF03 |  | a |  |  |  |  |  |  |  |  |  |  |  |  |
| GP3PA09501C0 |  | GA-P3 ; Ceiling Grid and Service Tile (Public Area) | 24d | 2012-04-28 | 2012-05-26 | GP3PA09205C0 SS+15d, GP3PA21117C0, GP3PA23008C0, GP3PA23009C0, GP3PA23015C0, GP3PA27001C0, GP3S005101C0, GAFCI22002R02 FS+58d, GP3PA23011C0, GP3PA09901C0 |  |  |  |  | 78.79d | 0d | CEILING GRID FOR GYPSUM [1047.05 h]; CEILING GRID FOR GYPSUM [89.7 m2]; Cost |  |  | S08PA09501C0 |  |  |  |  | GA | C | P3 | PA | CE | 095 | 01 |  | PP | BILL 6 | B06 | S1 | 01 | R00 | ACF06 |  | 095 |  |  |  |  |  |  | 323 | 952 |  |  |  | R3 |
| GP3PA09701C0 |  | GA-P3 ; Wall finishes (ST, WD, WC) (Public Area) | 36d | 2012-05-12 | 2012-06-24 | GP3PA26011C0, GP3PA27020C0 |  |  |  |  | 108.79d | 0d | ASSORTED WALL FINISH [597 h]; ASSORTED WALL FINISH [686 m2]; Cost |  |  | S08PA09701C0 |  |  |  |  | GA | C | P3 | PA | WF | 097 | 01 |  | PP | BILL 6 | B06 | S1 | 01 | R00 | ACF06 |  | 097 |  |  |  |  |  |  | 105 | 1002 |  |  |  |  |
| GP3PA09601C0 |  | GA-P3 ; Flooring (Rubber & etc) (Public Area) | 54d | 2012-05-26 | 2012-07-29 | GP3PA09205C0, GAFCI22002R02 FS+58d, GAFCI22001R02 FS+58d, GP3PA09501C0, GP3PA05501C0 FF |  |  |  |  | 125.29d | 0d | RUBBER FLOOR [240 h]; RUBBER FLOOR [600 m2]; Cost |  |  | S08PA09601C0 |  |  |  |  | GA | C | P3 | PA | FF | 096 | 01 |  | PP | BILL 6 | B06 | S1 | 03 | R00 | ACF06 |  | RF |  |  |  |  |  |  | 326 | 955 |  |  |  | R3 |
| GP3PA09602C0 |  | GA-P3 ; Flooring (Stone) (Public Area) | 54d | 2012-05-26 | 2012-07-29 | GP3PA09205C0, GAFCI22002R02 FS+58d, GP3PA09501C0 |  |  |  |  | 125.29d | 0d | STONE FLOOR [83 m2]; STONE FLOOR [76 h]; Cost |  |  | S08PA09601C0 |  |  |  |  | GA | C | P3 | PA | FF | 096 | 01 |  | PP | BILL 6 | B06 | S1 | 09 | R00 | ACF06 |  | ST |  |  |  |  |  |  | 326 | 955 |  |  |  | R3 |
| GP3PA09905C0 |  | GA-P3 ; Ceiling Prime & 1st coat (Public Area) | 36d | 2012-05-26 | 2012-07-08 | GP3PA09501C0 |  |  |  |  | 146.29d | 0d | CEILING PAINT [161 h]; CEILING PAINT [199 m2]; Cost |  |  | S08PA09905C0 |  |  |  |  | GA | C | P3 | PA | PA | 099 | 05 |  | PP | BILL 6 | B06 | S1 | 01 | R00 | ACF06 |  | 099 |  |  |  |  |  |  | 330 | 958 |  |  |  |  |
| GP3PA21115C0 |  | GA-P3 ; 2nd Fix, Inst of Sprinkler droppers (Public Area) | 48d | 2012-05-26 | 2012-07-22 | GP3PA09501C0 |  |  |  |  | 84.79d | 0d | MECHANICAL [1734 h]; Cost |  |  | S08PA21115C0 |  |  |  |  | GA | C | P3 | PA | ME | 211 | 15 | 2n | PP | BILL 6 | B06 | S1 | 2F | R00 | ACF07 | MEP | 211 |  |  |  |  |  |  |  |  |  |  |  |  |
| GP3PA23021C0 |  | GA-P3 ; 2nd Fix, Inst of Flexible Duct & Plenum boxes (Public Area) | 48d | 2012-05-26 | 2012-07-22 | GP3PA09205C0, GP3PA09501C0 |  |  |  |  | 84.79d | 0d | MECHANICAL [1962 h]; Cost |  |  | S08PA23021C0 |  |  |  |  | GA | C | P3 | PA | ME | 230 | 21 | 2n | PP | BILL 6 | B06 | S1 | 2F | R00 | ACF07 | MEP | 230 |  |  |  |  |  |  |  |  |  |  |  |  |
| GP3PA26017C0 |  | GA-P3 ; Final Fix, Inst of Ceiling rose (Public Area) | 30d | 2012-05-26 | 2012-07-01 | GP3PA09501C0 |  |  |  |  | 78.79d | 0d | ELECTRICAL [34.8 h]; Cost |  |  | S08PA26017C0 |  |  |  |  | GA | C | P3 | PA | ME | 260 | 17 | FF | PP | BILL 6 | B06 | S1 | FF | R00 | ACF07 | MEP | 260 |  |  |  |  |  |  |  |  |  |  |  |  |
| GP3PA27002C0 |  | GA-P3 ; 2nd Fix, Wiring Droppers (Public Area) | 48d | 2012-05-26 | 2012-07-22 | GP3PA09501C0 |  |  |  |  | 84.79d | 0d | ELECTRICAL [242.4 h]; Cost |  |  | S08PA27002C0 |  |  |  |  | GA | C | P3 | PA | ME | 270 | 02 | 2n | PP | BILL 6 | B06 | S1 | 2F | R00 | ACF07 | MEP | 270 |  |  |  |  |  |  |  |  |  |  |  |  |
| GP3PA21113C0 |  | GA-P3 ; Final Fix, Inst of Sprinklers head/ Extinguisher (Public Area) | 30d | 2012-06-02 | 2012-07-08 | GP3PA09501C0, GP3PA21115C0 SS+6d |  |  |  |  | 96.79d | 18d | MECHANICAL [297.6 h]; Cost |  |  | S08PA21113C0 |  |  |  |  | GA | C | P3 | PA | ME | 211 | 13 | FF | PP | BILL 6 | B06 | S1 | FF | R00 | ACF07 | MEP | 211 |  |  |  |  |  |  |  |  |  |  |  |  |
| GP3PA23019C0 |  | GA-P3 ; Final Fix, Inst of Grilles & Diffusers (Public Area) | 36d | 2012-06-02 | 2012-07-15 | GP3PA09501C0, GP3PA23021C0 SS+6d |  |  |  |  | 90.79d | 12d | MECHANICAL [1030.8 h]; Cost |  |  | S08PA23019C0 |  |  |  |  | GA | C | P3 | PA | ME | 230 | 19 | FF | PP | BILL 6 | B06 | S1 | FF | R00 | ACF07 | MEP | 230 |  |  |  |  |  |  |  |  |  |  |  |  |
| GP3PA26003C0 |  | GA-P3 ; Final Fix, Inst of Light fittings (Public Area) | 48d | 2012-06-02 | 2012-07-29 | GP3PA09501C0, GP3PA26017C0 SS+6d |  |  |  |  | 78.79d | 0d | ELECTRICAL [7791.6 h]; Cost |  |  | S08PA26003C0 |  |  |  |  | GA | C | P3 | PA | ME | 260 | 03 | FF | PP | BILL 6 | B06 | S1 | FF | R00 | ACF07 | MEP | 260 |  |  |  |  |  |  |  |  |  |  |  |  |
| GP3PA27030C0 |  | GA-P3 ; Final Fix, Inst of ELV devise (Detector/Speaker) (Public Area) | 30d | 2012-06-02 | 2012-07-08 | GP3PA09501C0, GP3PA27002C0 SS+6d |  |  |  |  | 96.79d | 18d | ELECTRICAL [710.4 h]; Cost |  |  | S08PA27030C0 |  |  |  |  | GA | C | P3 | PA | ME | 270 | 30 | FF | PP | BILL 6 | B06 | S1 | FF | R00 | ACF07 | MEP | 270 |  |  |  |  |  |  |  |  |  |  |  |  |
| GP3PA11009C0 |  | GA-P3 ; Signage (Public Area) | 14d | 2012-06-24 | 2012-07-10 | GP3PA09701C0 |  |  |  |  | 180.29d | 68d | SIGNAGES [35 h]; SIGNAGES [35.25 no]; Cost |  |  | S08PA11009C0 |  |  |  |  | GA | C | P3 | PA | SA | 110 | 09 |  | PP | BILL 6 | B06 | S1 | 09 | R00 | ACF08 |  | c |  |  |  |  |  |  | 322 | 951 |  | 08 |  |  |
| GP3PA26015C0 |  | GA-P3 ; Final Fix, Termination & Gladding of Cables (Public Area) | 30d | 2012-06-24 | 2012-07-29 | GP3PA26005C0 |  |  |  |  | 78.79d | 0d | ELECTRICAL [62.4 h]; Cost |  |  | S08PA26015C0 |  |  |  |  | GA | C | P3 | PA | ME | 260 | 15 | FF | PP | BILL 6 | B06 | S1 | FF | R00 | ACF07 | MEP | 260 |  |  |  |  |  |  |  |  |  |  |  |  |
| GP3PA09903C0 |  | GA-P3 ; Wall Final Paint (Public Area) | 36d | 2012-07-08 | 2012-08-21 | GP3PA09901C0, GP3PA09905C0 |  |  |  |  | 146.29d | 34d | WALL PAINT [98 h]; WALL PAINT [121 m2]; Cost |  |  | S08PA09903C0 |  |  |  |  | GA | C | P3 | PA | PA | 099 | 03 |  | PP | BILL 6 | B06 | S1 | 02 | R00 | ACF06 |  | 099 |  |  |  |  |  |  | 329 | 957 |  |  |  |  |
| GP3PA01006C0 |  | GA-P3 ; 2nd, Ceiling Inspection by Consultants (Public Area) | 0d | 2012-07-29 | 2012-07-29 | GP3PA21115C0, GP3PA23009C0, GP3PA23011C0, GP3PA23015C0, GP3PA27002C0, GP3PA09501C0, GP3PA21113C0, GP3PA23019C0, GP3PA26003C0, GP3PA26017C0, GP3PA27030C0, GP3PA26015C0 |  |  |  |  | 78.79d | 0d | Cost |  |  | S08PA01006C0 |  |  |  |  | GA | C | P3 | PA | ME | 010 | 06 | 2n | PP | BILL 6 | B06 | S1 | CI | R00 | ACF07 | MEP | 010 |  |  |  |  |  |  |  |  |  |  |  |  |
| GP3PA08107C0 |  | GA-P3 ; Doors (Public Area) | 19d | 2012-07-29 | 2012-08-22 | GP3PA08103C0, GP3PA09901C0, GP3PA09602C0, GP3PA09601C0 |  |  |  |  | 125.29d | 0d | ASSORTED DOORS [270 h]; ASSORTED DOORS [27 no]; Cost |  |  | S08PA08107C0 |  |  |  |  | GA | C | P3 | PA | DO | 081 | 07 |  | PP | BILL 6 | B06 | S1 | DR | R00 | ACF06 |  | 081 |  |  |  |  |  |  | 317 | 948 |  | 08 |  |  |
| GP3PA09503C0 |  | GA-P3 ; Ceiling closure - ACT/Gypsum (Public Area) | 24d | 2012-07-29 | 2012-08-28 | GP3PA01006C0, GP3PA21115C0, GP3PA26005C0, GP3PA27001C0, GP3PA27002C0, GP3PA09701C0, GP3PA23021C0, GP3PA26053C0, GP3PA26007C0 |  |  |  |  | 78.79d | 0d | ASSORTED CEILING FINISH [592.86 h]; CEILING GYPSUM [29.52 h]; ASSORTED CEILING FINISH [964 m2]; CEILING GYPSUM [90 m2]; Cost |  |  | S08PA09503C0 |  |  |  |  | GA | C | P3 | PA | CE | 095 | 03 |  | PP | BILL 6 | B06 | S1 | 02 | R00 | ACF06 |  | 095 |  |  |  |  |  |  | 324 | 953 |  |  |  | R3 |
| GP3PA08709C0 |  | GA-P3 ; Ironmongery (Public Area) | 20d | 2012-08-22 | 2012-09-15 | GP3PA08107C0 |  |  |  |  | 125.29d | 13d | IRONMONGERY [180 h]; IRONMONGERY [18 no]; Cost |  |  | S08PA08709C0 |  |  |  |  | GA | C | P3 | PA | DO | 087 | 09 |  | PP | BILL 6 | B06 | S1 | IM | R00 | ACF06 |  | 087 |  |  |  |  |  |  | 322 | 951 |  | 08 |  |  |
| GP3PA09907C0 |  | GA-P3 ; Ceiling Final paint (Public Area) | 18d | 2012-08-28 | 2012-09-18 | GP3PA09601C0, GP3PA09905C0, GP3PA09602C0, GP3PA09503C0 |  |  |  |  | 122.29d | 10d | CEILING PAINT [87 h]; CEILING PAINT [107 m2]; Cost |  |  | S08PA09907C0 |  |  |  |  | GA | C | P3 | PA | PA | 099 | 07 |  | PP | BILL 6 | B06 | S1 | 02 | R00 | ACF06 |  | 099 |  |  |  |  |  |  | 331 | 959 |  |  |  |  |
| GP3PA26019C0 |  | GA-P3 ; Final Fix, Inst of Switch/Sockets (Public Area) | 18d | 2012-08-28 | 2012-09-18 | GP3PA09901C0, GP3PA09503C0 |  |  |  |  | 78.79d | 0d | ELECTRICAL [132 h]; Cost |  |  | S08PA26019C0 |  |  |  |  | GA | C | P3 | PA | ME | 260 | 19 | FF | PP | BILL 6 | B06 | S1 | FF | R00 | ACF07 | MEP | 260 |  |  |  |  |  |  |  |  |  |  |  |  |

| ID | WBS | Activity | Duration | Start | Finish | Predecessors | Complete | Remaining | Planned start | Planned finish | Total float | Free float | Resources | Cost | Actual cost | change id | CCAD BUILDING(SET) | CCAD PHASE(SET) | CCAD FLOOR(SET) | CCAD ZONE(SET) | CCAD WORK(SET) | CCAD SECTION(SET) | CCAD SERIAL No.(SET) | CCAD RESPONSIBILITY(SET) | CCAD CBS(SET) | CCAD BILL(SET) | CCAD HANDOVER(SET) | CCAD TAG(SET) | CCAD REV(SET) | CCADACF (SET) | CCAD SSCF | user_number8 | user_integer1 | user_integer2 | user_number7 | RENZ % COMPLETE | Claimed This Month | P_811 | P_711 | CCAD CSA | Act Selector % | CCAD SUB ZONE MEP(SET) | July2011 Target% Complete | Change Order # | NEW ACTIVITY ID | U% | CCAD MEQ | CCAD DIVISION(SET) |
| --- | --- | --- | --- | --- | --- | --- | --- | --- | --- | --- | --- | --- | --- | --- | --- | --- | --- | --- | --- | --- | --- | --- | --- | --- | --- | --- | --- | --- | --- | --- | --- | --- | --- | --- | --- | --- | --- | --- | --- | --- | --- | --- | --- | --- | --- | --- | --- | --- |
|  | 10 | **Precommissioning Tesing & snagging (Elev.Lobby & Corridors)** |  | 2012-09-18 | 2012-10-16 |  |  |  |  |  |  |  |  |  |  |  |  |  |  |  |  |  |  |  |  |  |  |  |  |  |  |  |  |  |  |  |  |  |  |  |  |  |  |  |  |  |  |  |
| GP3TS01801C0 |  | GA-P3 ; MEP de-snag, FIREM sign-off | 10d | 2012-09-18 | 2012-09-30 | GP3PA26015C0, GP3PA21113C0, GP3PA23019C0, GP3PA26017C0, GP3PA26003C0, GP3PA27030C0, GP3PA26019C0 |  |  |  |  | 78.79d | 0d | TESTING & COMMISSIONING [2040 h]; Cost |  |  | GP3TS01801C0 | GA | C | P3 | TS | SC | 018 | 01 | PP | BILL 6 | B06 | S1 | 01 | R00 | ACF07 | 018 |  |  |  |  |  |  |  |  |  |  |  |  |  |  |  |  |  |
| GP3TS01802C0 |  | GA-P3 ; Touch-up & Clean / JV inspection /CIR /De-snag | 14.5d | 2012-09-30 | 2012-10-16 | GP3PA08709C0, GP3PA09601C0, GP3PA09701C0, GP3PA09903C0, GP3PA09907C0, GP3PA11009C0, GP3TS01801C0, GP3PA05501C0, GP3AB11003C30, GP3PA09602C0, GP3PA09503C0 |  |  |  |  | 112.29d | 0d | TESTING & COMMISSIONING [340 h]; Cost |  |  | GP3TS01802C0 | GA | C | P3 | TS | SC | 018 | 02 | PP | BILL 6 | B06 | S1 | 02 | R00 | ACF07 | 018 |  |  |  |  |  |  |  |  |  |  |  |  |  |  |  |  |  |
| GP3TS01805C0 |  | GA-P3 ; Consultant's final de-snag inspection | 0d | 2012-10-16 | 2012-10-16 | GP3TS01802C0 |  |  |  |  | 112.29d | 84.29d | Cost |  |  | GP3TS01803C0 | GA | C | P3 | TS | SC | 018 | 03 | PP | BILL 6 | B06 | S1 | 03 | R00 | ACF07 | 018 |  |  |  |  |  |  |  |  |  |  |  |  |  |  |  |  |  |
|  | 03 | **TR Room** |  |  |  |  |  |  |  |  |  |  |  |  |  |  |  |  |  |  |  |  |  |  |  |  |  |  |  |  |  |  |  |  |  |  |  |  |  |  |  |  |  |  |  |  |  |  |
|  | 04 | **Mech Room** |  | 2011-04-18 | 2012-09-05 |  |  |  |  |  |  |  |  |  |  |  |  |  |  |  |  |  |  |  |  |  |  |  |  |  |  |  |  |  |  |  |  |  |  |  |  |  |  |  |  |  |  |  |
| GP3M109201C0 |  | GA-P3 ; Metal Studs (Mech RM) | 20d | 2011-04-18 A | 2011-10-02 | GP3M123001C0, GP3PA09201C0 | 95% | 1d | 2011-07-20 | 2011-08-13 | 163.4d | 0d | PARTITIONS [1240 h]; PARTITIONS - Metal Studs [172 m]; Cost |  |  | I05ME09201C0 | GA | C | P3 | M1 | PT | 092 | 01 | PP | BILL 6 | B06 | S1 | 1F | R00 | ACF06 | 092 | 0 | 0 | 0 | 0 | 50 | 46849.95 | 90 | 80 | GP | PMS |  |  |  |  |  |  |  |
| GP3M123001C0 |  | GA-P3 ; 1st Fix, Inst. of Supports for MEP (Mech RM) | 29d | 2011-04-23 A | 2011-05-30 A | GP2S103399C0, GP2S203399C0 | 100% |  | 2011-06-14 | 2011-07-19 |  |  | MECHANICAL [2642.4 h]; Cost [28834.6 AED] | 28,834.58 | 28,834.58 | I05ME23001C0 | GA | C | P3 | M1 | ME | 230 | 01 |  | BILL 6 | B06 | S1 | 1F | R00 | ACF04 | 230 |  |  |  |  | 100 |  |  |  | MEP | M1F | 1S |  |  |  |  |  |  |
| GP3M122011C0 |  | GA-P3 ; 1st Fix, Inst of Drainage pipe (Mech RM) | 66d | 2011-06-08 A | 2011-12-06 | GP3M123001C0 SS, GP3M126001C0 SS+12d | 20% | 52.8d | 2011-08-15 | 2011-11-01 | 185.52d | 0d | PLUMBING [644.4 h]; Cost [35208.5 AED] | 35,208.51 | 7,041.7 | I05ME22011C0 | GA | C | P3 | M1 | ME | 220 | 11 | PP | BILL 6 | B06 | S1 | 1F | R00 | ACF04 | 220 |  |  |  |  |  | 24501.05 |  |  | MEP | M1F | 1S | 60 |  |  |  |  |  |
| GP3M126001C0 |  | GA-P3 ; 1st Fix, Inst of Trunking/Conduiting (Mech RM) | 66d | 2011-06-08 A | 2011-12-06 | GP3M123001C0 SS | 20% | 52.8d | 2011-08-01 | 2011-10-18 | 185.52d | 0d | ELECTRICAL [451.2 h]; Cost [24536.7 AED] | 24,536.7 | 4,907.34 | I05ME26001C0 | GA | C | P3 | M1 | ME | 260 | 01 | PP | BILL 6 | B06 | S1 | 1F | R00 | ACF04 | 260 |  |  |  |  |  | 13283 |  |  | MEP | M1F | 1S | 45 |  |  |  |  |  |
| GP3M121111C0 |  | GA-P3 ; 1st Fix, Inst of Sprinkler main pipe (Mech RM) | 156d | 2011-07-10 A | 2011-11-30 | GP3M122006C0 SS+10d, GP3M123001C0 SS | 75% | 39d | 2011-08-23 | 2012-03-03 | 204d | 0d | MECHANICAL [608.4 h]; Cost [29558 AED] | 29,557.99 | 22,168.49 | I05ME21111C0 | GA | C | P3 | M1 | ME | 211 | 11 | PP | BILL 6 | B06 | S1 | 1F | R00 | ACF04 | 211 |  |  |  |  |  |  |  |  | MEP | M1F | 1S | 98 |  |  |  |  |  |
| GP3M109203C0 |  | GA-P3 ; Partitions 1st face (Mech RM) | 33d | 2011-08-03 A | 2011-10-04 | GP3M109201C0 | 95% | 1.65d | 2011-08-23 | 2011-10-03 | 236.27d | 54.27d | PARTITIONS [172 m]; PARTITIONS [967 h]; Cost |  |  | I05ME09203C0 | GA | C | P3 | M1 | PT | 092 | 03 | PP | BILL 6 | B06 | S1 | 2F | R00 | ACF06 | 092 | 0 | 0 | 0 | 0 |  |  | 50 | 0 | GP | P1F |  |  | 314 | 1463 |  |  |  |
| GP3M109205C0 |  | GA-P3 ; Partitions Closing (Mech RM) | 37d | 2011-08-03 A | 2012-01-22 | GAFOA09208C1 FF, GP3M109201C0, GP3M109203C0, GP3M122006C0, GP3M122006C0 FF, GP3M122011C0, GP3M108101C0 FF | 7% | 34.48d | 2011-10-11 | 2011-11-28 | 182d | 0d | PARTITIONS [172 m]; PARTITIONS [1230 h]; Cost |  |  | I05ME09205C0 | GA | C | P3 | M1 | PT | 092 | 05 | PP | BILL 6 | B06 | S1 | FF | R00 | ACF06 | 092 | 0 | 0 | 0 | 0 |  |  | 5 | 0 | GP | P2F |  |  | 315 | 1464 | 5 |  |  |
| GP3M109601C0 |  | GA-P3 ; Floor Finishes (Mech RM) | 34d | 2011-08-03 A | 2012-02-26 | GP3M107101C0, GP3M109205C0 | 15% | 28.9d | 2011-12-11 | 2012-01-21 | 257.1d | 0d | ASSORTED FLOOR FINISH [14736 h]; ASSORTED FLOOR FINISH [8187 m2]; Cost |  |  | I05ME09601C0 | GA | C | P3 | M1 | FF | 096 | 01 | PP | BILL 6 | B06 | S1 | 01 | R00 | ACF06 | FF | 0 | 0 | 0 | 0 |  |  | 5 | 0 |  |  |  |  | 326 | 1501 |  |  |  |
| GP3M109901C0 |  | GA-P3 ; Wall Prime & 1st coat (Mech RM) | 24d | 2011-09-05 A | 2012-02-18 | GP3M109205C0 | 10% | 21.6d | 2011-12-19 | 2012-01-17 | 238.4d | 0d | WALL PAINT [82 h]; WALL PAINT [101 m2]; Cost |  |  | I05ME09901C0 | GA | C | P3 | M1 | PA | 099 | 01 | PP | BILL 6 | B06 | S1 | 01 | R00 | ACF06 | 099 |  |  |  |  |  |  |  |  |  |  |  |  | 328 | 1469 |  |  |  |
| GP3M121119C0 |  | GA-P3 ; 1st Fix, Inst of Sprinkler branch pipe (Mech RM) | 54d | 2011-09-05 A | 2011-12-18 | GP3M121111C0 | 75% | 13.5d | 2011-10-29 | 2012-01-05 | 259.5d | 29.5d | MECHANICAL [931.2 h]; Cost [50874.3 AED] | 50,874.31 | 38,155.74 | I05ME21119C0 | GA | C | P3 | M1 | ME | 211 | 19 | PP | BILL 6 | B06 | S1 | 1F | R00 | ACF04 | 211 |  |  |  |  |  |  |  |  | MEP | M1F | 1S |  |  |  |  |  |  |
| GP3M122006C0 |  | GA-P3 ; 1st Fix, Inst of Water supply pipe (Mech RM) | 54d | 2011-10-01 | 2011-12-07 | GP3M122011C0 SS+7d, GP3M123001C0 |  |  |  |  | 185.52d | 0d | PLUMBING [500.4 h]; Cost |  |  | I05ME22006C0 | GA | C | P3 | M1 | ME | 220 | 06 | PP | BILL 6 | B06 | S1 | 1F | R00 | ACF04 | 220 |  |  |  |  |  |  |  |  | MEP | M1F | 1S | 25 |  |  |  |  |  |
| GP3M123013C0 |  | GA-P3 ; 2nd Fix, Inst of Equipment (AHU) (Mech RM) | 36d | 2011-10-01 | 2011-11-14 | GP3CO04003C0 |  |  |  |  | 148d | 0d | MECHANICAL [10837.2 h]; Cost |  |  | I05ME23013C0 | GA | C | P3 | M1 | ME | 230 | 13 | PP | BILL 6 | B06 | S1 | 2F | R00 | ACF04 | 230 |  |  |  |  |  |  |  |  | MEP |  | 2n |  |  |  |  | H |  |
| GP3M123019C0 |  | GA-P3 ; 1st Fix, Inst of CHW pipe (Mech RM) | 54d | 2011-10-12 | 2011-12-19 | GP3M121111C0 SS+12d, GP3M123001C0 |  |  |  |  | 204d | 0d | MECHANICAL [1650 h]; Cost |  |  | I05ME23019C0 | GA | C | P3 | M1 | ME | 230 | 19 | PP | BILL 6 | B06 | S1 | 1F | R00 | ACF04 | 230 |  |  |  |  |  | 20905.22 |  |  | MEP | M1F | 1S | 50 |  |  |  |  |  |
| GP3M123005C0 |  | GA-P3 ; 1st Fix, Inst of Ducting (Mech RM) | 54d | 2011-10-15 | 2011-12-21 | GP3M123001C0, GP3M123013C0 SS+12d |  |  |  |  | 148d | 0d | MECHANICAL [7458 h]; Cost |  |  | I05ME23005C0 | GA | C | P3 | M1 | ME | 230 | 05 | PP | BILL 6 | B06 | S1 | 1F | R00 | ACF04 | 230 |  |  |  |  |  |  |  |  | MEP | M1F | 1S | 75 |  |  |  |  |  |
| GP3M126011C0 |  | GA-P3 ; 1st Fix, Inst of Cable Tray (Mech RM) | 54d | 2011-10-15 | 2011-12-21 | GP3M123013C0 SS+12d |  |  |  |  | 202d | 26d | ELECTRICAL [244.8 h]; Cost |  |  | I05ME26011C0 | GA | C | P3 | M1 | ME | 260 | 11 | PP | BILL 6 | B06 | S1 | 1F | R00 | ACF04 | 260 |  |  |  |  |  |  |  |  | MEP | M1F | 1S | 45 |  |  |  |  |  |
| GP3M123011C0 |  | GA-P3 ; 2nd Fix, Inst of Equipment (FCU,FAN,PUMP) (Mech RM) | 60d | 2011-11-15 | 2012-01-26 | GP3M123013C0 |  |  |  |  | 226d | 0d | MECHANICAL [601.2 h]; Cost |  |  | I05ME23011C0 | GA | C | P3 | M1 | ME | 230 | 11 | PP | BILL 6 | B06 | S1 | 2F | R00 | ACF04 | 230 |  |  |  |  |  |  |  |  | MEP |  | 2n |  |  |  |  | H |  |
| GP3M126009C0 |  | GA-P3 ; 2nd Fix, Inst of Equipment (DB, TR, SG) (Mech RM) | 60d | 2011-11-15 | 2012-01-26 | GP3M123013C0 |  |  |  |  | 226d | 78d | ELECTRICAL [946.8 h]; Cost |  |  | I05ME26009C0 | GA | C | P3 | M1 | ME | 260 | 09 | PP | BILL 6 | B06 | S1 | 2F | R00 | ACF04 | 260 |  |  |  |  |  |  |  |  | MEP |  | 2n |  |  |  |  | E |  |
| GP3M127020C0 |  | GA-P3 ; 2nd Fix, Inst of ELV Equipment (Panels) (Mech RM) | 60d | 2011-11-15 | 2012-01-26 | GP3M123013C0 |  |  |  |  | 226d | 78d | ELECTRICAL [1618.8 h]; Cost |  |  | I05ME27020C0 | GA | C | P3 | M1 | ME | 270 | 20 | PP | BILL 6 | B06 | S1 | 2F | R00 | ACF04 | 270 |  |  |  |  |  |  |  |  | MEP |  | 2n |  |  |  |  | E |  |
| GP3M107101C0 |  | GA-P3 ; Waterproofing (Mech RM) | 15d | 2011-12-06 | 2011-12-24 | GP3M122011C0, GP3M123013C0 |  |  |  |  | 281.3d | 24.2d | THERMAL & MOISTURE [72 h]; THERMAL & MOISTURE [424 m2]; Cost |  |  | I05ME09901C0 | GA | C | P3 | M1 | FF | 071 | 01 | PP | BILL 6 | B06 | S1 | 01 | R00 | ACF03 | 071 |  |  |  |  |  |  |  |  |  |  |  |  | 328 | 1469 |  |  |  |
| GP3M121117C0 |  | GA-P3 ; 2nd Fix, Inst of Zone Control Valve (Mech RM) | 48d | 2011-12-20 | 2012-02-15 | GP3M123013C0, GP3M123019C0 |  |  |  |  | 210d | 62d | MECHANICAL [1000.8 h]; Cost |  |  | I05ME21117C0 | GA | C | P3 | M1 | ME | 211 | 17 | PP | BILL 6 | B06 | S1 | 2F | R00 | ACF07 | 211 |  |  |  |  |  |  |  |  | MEP |  | 2n |  |  |  |  |  |  |
| GP3M123015C0 |  | GA-P3 ; 2nd Fix, Inst of VCD's/FD's (Mech RM) | 48d | 2011-12-22 | 2012-02-18 | GP3M123005C0 |  |  |  |  | 208d | 6d | MECHANICAL [673.2 h]; Cost |  |  | I05ME23015C0 | GA | C | P3 | M1 | ME | 230 | 15 | PP | BILL 6 | B06 | S1 | 2F | R00 | ACF07 | 230 |  |  |  |  |  |  |  |  | MEP |  | 2n |  |  |  |  |  |  |
| GP3M123017C0 |  | GA-P3 ; 2nd Fix, Insulation of CHW pipe & Duct (Mech RM) | 54d | 2011-12-22 | 2012-02-25 | GP3M123005C0, GP3M123019C0 |  |  |  |  | 202d | 0d | MECHANICAL [1699.2 h]; Cost |  |  | I05ME23017C0 | GA | C | P3 | M1 | ME | 230 | 17 | PP | BILL 6 | B06 | S1 | 2F | R00 | ACF07 | 230 |  |  |  |  |  |  |  |  | MEP |  | 2n |  |  |  |  |  |  |
| GP3M127010C0 |  | GA-P3 ; 1st Fix, Inst of Trunking for ELV system (Mech RM) | 54d | 2011-12-22 | 2012-02-25 | GP3M123005C0 |  |  |  |  | 148d | 0d | ELECTRICAL [597.6 h]; Cost |  |  | I05ME27010C0 | GA | C | P3 | M1 | ME | 270 | 10 | PP | BILL 6 | B06 | S1 | 1F | R00 | ACF04 | 270 |  |  |  |  |  |  |  |  | MEP | M1F | 1S |  |  |  |  |  |  |
| GP3M108101C0 |  | GA-P3 ; Metal Door Frames (Mech RM) | 18d | 2012-01-02 | 2012-01-22 | GP3M109201C0, GNHE08101C0 FS+130d |  |  |  |  | 91d | 0d | METAL DOORS [54 h]; Cost |  |  | I05ME08101C0 | GA | C | P3 | M1 | DO | 081 | 01 | PP | BILL 6 | B06 | S1 | DF | R00 | ACF06 | 081 |  |  |  |  |  |  |  |  |  |  |  |  | 316 | 1465 |  |  | 08 |
| GP3M121115C0 |  | GA-P3 ; 2nd Fix, Inst of Sprinkler droppers (Mech RM) | 48d | 2012-01-23 | 2012-03-19 | GP3M109205C0, GP3M121119C0 |  |  |  |  | 230d | 0d | MECHANICAL [1734 h]; Cost |  |  | I05ME21115C0 | GA | C | P3 | M1 | ME | 211 | 15 | PP | BILL 6 | B06 | S1 | 2F | R00 | ACF07 | 211 |  |  |  |  |  |  |  |  | MEP |  | 2n |  |  |  |  |  |  |
| GP3M121123C0 |  | GA-P3 ; Final Fix, Inst of Fire Extinguishers/FHC (Mech RM) | 18d | 2012-01-23 | 2012-02-13 | GP3M109205C0 |  |  |  |  | 290d | 142d | MECHANICAL [1230 h]; Cost |  |  | I05ME21123C0 | GA | C | P3 | M1 | ME | 211 | 23 | PP | BILL 6 | B06 | S1 | FF | R00 | ACF07 | 211 |  |  |  |  |  |  |  |  | MEP |  | FF |  |  |  |  |  |  |
| GP3M126007C0 |  | GA-P3 ; 2nd Fix, Cable Pulling (Mech RM) | 48d | 2012-01-23 | 2012-03-19 | GP3M126011C0, GP3M109205C0 |  |  |  |  | 182d | 34d | ELECTRICAL [1117.2 h]; Cost |  |  | I05ME26007C0 | GA | C | P3 | M1 | ME | 260 | 07 | PP | BILL 6 | B06 | S1 | 2F | R00 | ACF07 | 260 |  |  |  |  |  |  |  |  | MEP |  | 2n |  |  |  |  |  |  |
| GP3M126015C0 |  | GA-P3 ; Final Fix, Inst of Ceiling rose (Mech RM) | 30d | 2012-01-23 | 2012-02-27 | GP3M109205C0 |  |  |  |  | 278d | 130d | ELECTRICAL [34.8 h]; Cost |  |  | I05ME26015C0 | GA | C | P3 | M1 | ME | 260 | 15 | PP | BILL 6 | B06 | S1 | FF | R00 | ACF07 | 260 |  |  |  |  |  |  |  |  | MEP |  | FF |  |  |  |  |  |  |
| GP3M123009C0 |  | GA-P3 ; 2nd Fix, Inst of VAV'S CHW connection (Mech RM) | 48d | 2012-01-28 | 2012-03-24 | GP3M123011C0 |  |  |  |  | 226d | 78d | MECHANICAL [788.4 h]; Cost |  |  | I05ME23009C0 | GA | C | P3 | M1 | ME | 230 | 09 | PP | BILL 6 | B06 | S1 | 2F | R00 | ACF07 | 230 |  |  |  |  |  |  |  |  | MEP |  | 2n |  |  |  |  |  |  |
| GP3M126019C0 |  | GA-P3 ; Final Fix, Inst of Light fittings (Mech RM) | 48d | 2012-02-18 | 2012-04-14 | GP3M109901C0 |  |  |  |  | 238.4d | 90.4d | ELECTRICAL [7791.6 h]; Cost |  |  | I05ME26019C0 | GA | C | P3 | M1 | ME | 260 | 19 | PP | BILL 6 | B06 | S1 | FF | R00 | ACF07 | 260 |  |  |  |  |  |  |  |  | MEP |  | FF |  |  |  |  |  |  |
| GP3M123023C0 |  | GA-P3 ; Final Fix, Inst of Flexible Duct & Plenum boxes (Mech RM) | 42d | 2012-02-26 | 2012-04-14 | GP3M123015C0, GP3M123017C0 |  |  |  |  | 202d | 0d | MECHANICAL [1962 h]; Cost |  |  | I05ME23023C0 | GA | C | P3 | M1 | ME | 230 | 23 | PP | BILL 6 | B06 | S1 | FF | R00 | ACF07 | 230 |  |  |  |  |  |  |  |  | MEP |  | FF |  |  |  |  |  |  |
| GP3M127001C0 |  | GA-P3 ; 1st Fix, Wiring/ Cabling work (Mech RM) | 54d | 2012-02-26 | 2012-04-28 | GP3M126001C0, GP3M126011C0, GP3M127010C0 |  |  |  |  | 148d | 0d | ELECTRICAL [242.4 h]; Cost |  |  | I05ME27001C0 | GA | C | P3 | M1 | ME | 270 | 01 | PP | BILL 6 | B06 | S1 | 1F | R00 | ACF04 | 270 |  |  |  |  |  |  |  |  | MEP | M1F | 1S |  |  |  |  |  |  |
| GP3M108105C0 |  | GA-P3 ; Metal Doors (Mech RM) | 16d | 2012-02-26 | 2012-03-15 | GP3M108101C0, GP3M109901C0, GP3M109601C0 |  |  |  |  | 257.1d | 0d | METAL DOORS [190 h]; METAL DOORS [19 no]; Cost |  |  | I05ME08105C0 | GA | C | P3 | M1 | DO | 081 | 05 | PP | BILL 6 | B06 | S1 | DR | R00 | ACF06 | 081 |  |  |  |  |  |  |  |  |  |  |  |  | 317 | 1466 |  |  | 08 |
| GP3M108709C0 |  | GA-P3 ; Ironmongery (Mech RM) | 18d | 2012-03-15 | 2012-04-05 | GP3M108105C0 |  |  |  |  | 257.1d | 109.1d | IRONMONGERY [80 h]; IRONMONGERY [8 no]; Cost |  |  | I05ME08709C0 | GA | C | P3 | M1 | DO | 087 | 09 | PP | BILL 6 | B06 | S1 | IM | R00 | ACF06 | 087 |  |  |  |  |  |  |  |  |  |  |  |  | 322 | 1467 |  |  | 08 |
| GP3M121121C0 |  | GA-P3 ; Final Fix, Inst of Sprinklers head (Mech RM) | 30d | 2012-03-20 | 2012-04-23 | GP3M121115C0 |  |  |  |  | 230d | 82d | MECHANICAL [297.6 h]; Cost |  |  | I05ME21121C0 | GA | C | P3 | M1 | ME | 211 | 21 | PP | BILL 6 | B06 | S1 | FF | R00 | ACF07 | 211 |  |  |  |  |  |  |  |  | MEP |  | FF |  |  |  |  |  |  |
| GP3M109903C0 |  | GA-P3 ; Wall - Final Paint (Mech RM) | 24d | 2012-03-25 | 2012-04-22 | GP3M109901C0, GP3CO04405C0 |  |  |  |  | 213.95d | 0d | WALL PAINT [45 h]; WALL PAINT [55 m2]; Cost |  |  | I05ME09903C0 | GA | C | P3 | M1 | PA | 099 | 03 | PP | BILL 6 | B06 | S1 | 02 | R00 | ACF06 | 099 |  |  |  |  |  |  |  |  |  |  |  |  | 329 | 1470 |  |  |  |
| GP3M123021C0 |  | GA-P3 ; Final Fix, Inst of Grilles & Diffusers (Mech RM) | 36d | 2012-04-15 | 2012-05-26 | GP3M123023C0 |  |  |  |  | 202d | 54d | MECHANICAL [1030.8 h]; Cost |  |  | I05ME23021C0 | GA | C | P3 | M1 | ME | 230 | 21 | PP | BILL 6 | B06 | S1 | FF | R00 | ACF07 | 230 |  |  |  |  |  |  |  |  | MEP |  | FF |  |  |  |  |  |  |
| GP3M122003C0 |  | GA-P3 ; Final Fix, Inst of All drain (Mech RM) | 18d | 2012-04-22 | 2012-05-13 | GP3M109601C0, GP3M109903C0 |  |  |  |  | 213.95d | 65.95d | PLUMBING [644.4 h]; Cost |  |  | I05ME22003C0 | GA | C | P3 | M1 | ME | 220 | 03 | PP | BILL 6 | B06 | S1 | FF | R00 | ACF07 | 220 |  |  |  |  |  |  |  |  | MEP |  | FF |  |  |  |  |  |  |
| GP3M126017C0 |  | GA-P3 ; Final Fix, Inst of Switch/Sockets (Mech RM) | 12d | 2012-04-22 | 2012-05-06 | GP3M109903C0 |  |  |  |  | 219.95d | 71.95d | ELECTRICAL [132 h]; Cost |  |  | I05ME26017C0 | GA | C | P3 | M1 | ME | 260 | 17 | PP | BILL 6 | B06 | S1 | FF | R00 | ACF07 | 260 |  |  |  |  |  |  |  |  | MEP |  | FF |  |  |  |  |  |  |
| GP3M126005C0 |  | GA-P3 ; 2nd Fix, Wiring for Power/Lighting/Emergency (Mech RM) | 48d | 2012-04-29 | 2012-06-24 | GP3M126001C0, GP3M126007C0, GP3M126011C0, GP3M127001C0, GP3M127010C0 |  |  |  |  | 148d | 0d | ELECTRICAL [242.4 h]; Cost |  |  | I05ME26005C0 | GA | C | P3 | M1 | ME | 260 | 05 | PP | BILL 6 | B06 | S1 | 2F | R00 | ACF07 | 260 |  |  |  |  |  |  |  |  | MEP |  | 2n |  |  |  |  |  |  |
| GP3M127003C0 |  | GA-P3 ; Final Fix, BMS connection work to Equipment (Mech RM) | 48d | 2012-04-29 | 2012-06-24 | GP3M121117C0, GP3M123011C0, GP3M123013C0, GP3M123015C0, GP3M126009C0, GP3M127001C0, GP3M127020C0 |  |  |  |  | 148d | 0d | ELECTRICAL [10323.6 h]; Cost |  |  | I05ME27003C0 | GA | C | P3 | M1 | ME | 270 | 03 | PP | BILL 6 | B06 | S1 | FF | R00 | ACF07 | 270 |  |  |  |  |  |  |  |  | MEP |  | FF |  |  |  |  |  |  |
| GP3M126013C0 |  | GA-P3 ; Final Fix, Termination & Gladding of Cables (Mech RM) | 30d | 2012-06-25 | 2012-07-29 | GP3M109205C0, GP3M126005C0 |  |  |  |  | 148d | 0d | ELECTRICAL [62.4 h]; Cost |  |  | I05ME26013C0 | GA | C | P3 | M1 | ME | 260 | 13 | PP | BILL 6 | B06 | S1 | FF | R00 | ACF07 | 260 |  |  |  |  |  |  |  |  | MEP |  | FF |  |  |  |  |  |  |
| GP3M127030C0 |  | GA-P3 ; Final Fix, Inst of ELV device (Detector/Speaker) (Mech RM) | 30d | 2012-06-25 | 2012-07-29 | GP3M109901C0, GP3M123009C0, GP3M127020C0, GP3M127003C0 |  |  |  |  | 148d | 0d | ELECTRICAL [710.4 h]; Cost |  |  | I05ME27030C0 | GA | C | P3 | M1 | ME | 270 | 30 | PP | BILL 6 | B06 | S1 | FF | R00 | ACF07 | 270 |  |  |  |  |  |  |  |  | MEP |  | FF |  |  |  |  |  |  |

| ID | WBS | Activity | Type | Duration | Start | Finish | Predecessors | Complete | Remaining | Planned start | Planned finish | Total float | Free float | Resources | change id | CCAD BUILDING(SET) | CCAD PHASE(SET) | CCAD FLOOR(SET) | CCAD ZONE(SET) | CCAD WORK(SET) | CCAD SECTION(SET) | CCAD SERIAL No.(SET) | CCAD RESPONSIBILITY(SET) | CCAD CBS(SET) | CCAD BILL(SET) | CCAD HANDOVER(SET) | CCAD TAG(SET) | CCAD REV(SET) | CCADACF (SET) | CCAD SSCF | Actual Cost | RENZ % COMPLETE | Phase | Area/ Department | Grids | Are | Weight & Nos | Process | Levels | CCAD CSA | Change Order # | NEW ACTIVITY ID | Claimed This Month | CCAD DIVISION(SET) | user_number8 | user_integer1 | user_integer2 | user_number7 | P_811 | P_711 | CCAD (VO) |
| --- | --- | --- | --- | --- | --- | --- | --- | --- | --- | --- | --- | --- | --- | --- | --- | --- | --- | --- | --- | --- | --- | --- | --- | --- | --- | --- | --- | --- | --- | --- | --- | --- | --- | --- | --- | --- | --- | --- | --- | --- | --- | --- | --- | --- | --- | --- | --- | --- | --- | --- | --- |
|  | 10 | **Precommissioning Tesing & snagging (Mech Room)** |  |  | 2012-07-30 | 2012-09-05 |  |  |  |  |  |  |  |  |  |  |  |  |  |  |  |  |  |  |  |  |  |  |  |  |  |  |  |  |  |  |  |  |  |  |  |  |  |  |  |  |  |  |  |  |  |
| GP3TS01811C0 |  | GA-P3 ; MEP de-snag, FIREM sign-off |  | 12d | 2012-07-30 | 2012-08-12 | GP3M121123C0, GP3M126015C0, GP3M126017C0, GP3M126019C0, GP3M122003C0, GP3M123023C0, GP3M127030C0, GP3M127003C0, GP3M121121C0, GP3M123021C0, GP3M126013C0 |  |  |  |  | 148d | 0d | TESTING & COMMISSIONING [510 h]; Cost | GP3TS01801C0 | GA | C | P3 | TS | SC | 018 | 01 | PP | BILL 6 | B06 | S1 | 01 | R00 | ACF07 | 018 |  |  |  |  |  |  |  |  |  |  |  |  |  |  |  |  |  |  |  |  |  |
| GP3TS01804C0 |  | GA-P3 ; Touch-up & Clean / JV inspection /CIR /De-snag |  | 18d | 2012-08-13 | 2012-09-04 | GP3CO04413C1, GP3M107101C0, GP3M108709C0, GP3M109601C0, GP3TS01811C0, GP3M109903C0 |  |  |  |  | 148d | 0d | TESTING & COMMISSIONING [128 h]; Cost | GP3TS01802C0 | GA | C | P3 | TS | SC | 018 | 02 | PP | BILL 6 | B06 | S1 | 02 | R00 | ACF07 | 018 |  |  |  |  |  |  |  |  |  |  |  |  |  |  |  |  |  |  |  |  |  |
| GP3TS01806C0 |  | GA-P3 ; Consultant's final de-snag inspection |  | 0d | 2012-09-05 | 2012-09-05 | GP3TS01804C0 |  |  |  |  | 148d | 120d | Cost | GP3TS01803C0 | GA | C | P3 | TS | SC | 018 | 03 | PP | BILL 6 | B06 | S1 | 03 | R00 | ACF07 | 018 |  |  |  |  |  |  |  |  |  |  |  |  |  |  |  |  |  |  |  |  |  |
|  | P2 | **Level Podium 2** |  |  | 2010-10-13 | 2013-01-22 |  |  |  |  |  |  |  |  |  |  |  |  |  |  |  |  |  |  |  |  |  |  |  |  |  |  |  |  |  |  |  |  |  |  |  |  |  |  |  |  |  |  |  |  |  |
|  | 01 | **Structure & Envelopment** |  |  | 2010-10-13 | 2012-07-30 |  |  |  |  |  |  |  |  |  |  |  |  |  |  |  |  |  |  |  |  |  |  |  |  |  |  |  |  |  |  |  |  |  |  |  |  |  |  |  |  |  |  |  |  |  |
| GP2S105101C0 |  | GA-P2 ; Erection of Structural Steel of POD 2 (Zone S1) |  | 11.15d | 2010-10-13 A | 2010-12-10 A | GP3S105103C0 | 100% |  | 2010-12-01 | 2010-12-15 |  |  | STRUCTURAL STEEL [2822 h]; STRUCTURAL STEEL [94 T(Fe)]; Cost | GP2S105101C0 | GA | C | P2 | S1 | ST | 051 | 01 |  | BILL 6 | B06 | S1 | 01 | R00 | ACF03 | 051 | 4393516.76 | 100 | Z2 | GA | P12 | R | A6 | EREC | POD2 | ST |  |  |  |  |  |  |  |  |  |  |  |
| GP2S105103C0 |  | GA-P2 ; Alignment & welding of POD 2 (Zone S1) |  | 5d | 2010-11-01 A | 2010-12-15 A | GP2S105101C0 | 100% |  | 2011-01-12 | 2011-01-18 |  |  | STRUCTURAL STEEL [774 h]; Cost | GP2S105103C0 | GA | C | P2 | S1 | ST | 051 | 03 |  | BILL 6 | B06 | S1 | 02 | R00 | ACF03 | 051 | 488168.53 | 100 | Z2 | GA | P12 | R | A6 | EREC | POD2 | ST |  |  |  |  |  |  |  |  |  |  |  |
| GP2S205101C0 |  | GA-P2 ; Erection of Structural Steel of POD 2 (Zone S2) |  | 11.2d | 2010-11-10 A | 2011-01-20 A | GP3S205103C0 | 100% |  | 2010-12-20 | 2011-01-03 |  |  | STRUCTURAL STEEL [2249 h]; STRUCTURAL STEEL [75 T(Fe)]; Cost | GP2S205101C0 | GA | C | P2 | S2 | ST | 051 | 01 |  | BILL 6 | B06 | S1 | 01 | R00 | ACF03 | 051 | 3287456.6 | 100 | Z2 | GA | P12 | R | A6 | EREC | POD2 | ST |  |  |  |  |  |  |  |  |  |  |  |
| GP2S205103C0 |  | GA-P2 ; Alignment & welding of POD 2 (Zone S2) |  | 5d | 2010-11-25 A | 2011-01-27 A | GP2S205101C0 | 100% |  | 2011-01-31 | 2011-02-05 |  |  | STRUCTURAL STEEL [579 h]; Cost | GP2S205103C0 | GA | C | P2 | S2 | ST | 051 | 03 |  | BILL 6 | B06 | S1 | 02 | R00 | ACF03 | 051 | 365272.96 | 100 | Z2 | GA | P12 | R | A6 | EREC | POD2 | ST |  |  |  |  |  |  |  |  |  |  |  |
| GP2S105305C0 |  | GA-P2 ; Metal Decking POD 2 (Zone S1) |  | 10d | 2010-12-08 A | 2011-01-12 A | GP1S105101C0, GP2S105103C0, GP2S205305C0 | 100% |  | 2011-02-20 | 2011-03-02 |  |  | METAL DECKING [2874 h]; METAL DECKING [3637 m2]; Cost | GP2S105305C0 | GA | C | P2 | S1 | ST | 053 | 05 |  | BILL 6 | B06 | S1 | 03 | R00 | ACF03 | 053 | 418891.65 | 100 | Z2 | GA | P12 | R | A6 | MDEC | POD2 | ST |  |  |  |  |  |  |  |  |  |  |  |
| GP2S103399C0 |  | GA-P2 ; Concrete on Metal Decking POD 2 (Zone S1) |  | 10d | 2011-01-08 A | 2011-03-03 A | GP2S105305C0 | 100% |  | 2011-02-19 | 2011-03-01 |  |  | CONCRETE [33400 h]; CONCRETE [840 m3]; Cost | GP2S103399C0 | GA | C | P2 | S1 | CT | 033 | 99 |  | BILL 6 | B06 | S1 | 08 | R00 | ACF03 | 033 |  | 100 | Z2 | GA | P12 | R | A6 | MDEC | POD2 |  |  |  |  |  |  |  |  |  |  |  |  |
| GP2S205305C0 |  | GA-P2 ; Metal Decking POD 2 (Zone S2) |  | 15d | 2011-01-08 A | 2011-03-02 A | GP1S205101C0, GP2S205103C0, OGNMU00005S0 | 100% |  | 2011-01-24 | 2011-02-09 |  |  | METAL DECKING [2150 h]; METAL DECKING [2721 m2]; Cost | GP2S205305C0 | GA | C | P2 | S2 | ST | 053 | 05 |  | BILL 6 | B06 | S1 | 03 | R00 | ACF03 | 053 | 313436.41 | 100 | Z2 | GA | P12 | R | A6 | MDEC | POD2 | ST |  |  |  |  |  |  |  |  |  |  |  |
| GP2S107807C0 |  | GA-P2 ; Cementitious Fire Proofing at POD 2 (Zone S1) |  | 14d | 2011-02-24 A | 2011-04-27 A | GP1S103399C0 | 100% |  | 2011-03-24 | 2011-04-10 |  |  | CEMENTITIOUS FIREPROOFING [2787 h]; CEMENTITIOUS FIREPROOFING [5573 m2]; Cost | GP2S107807C0 | GA | C | P2 | S1 | ST | 078 | 07 |  | BILL 6 | B06 | S1 | 04 | R00 | ACF03 | 078 |  | 100 | Z2 | GA | P12 | R | A6 | FIRE | POD2 | ST |  |  |  |  |  |  |  |  |  |  |  |
| GP2S203399C0 |  | GA-P2 ; Concrete on Metal Decking POD 2 (Zone S2) |  | 10d | 2011-03-03 A | 2011-03-12 A | GP2S205305C0 | 100% |  | 2011-03-01 | 2011-03-13 |  |  | CONCRETE [9816 h]; CONCRETE [247 m3]; Cost | GP2S203399C0 | GA | C | P2 | S2 | CT | 033 | 99 |  | BILL 6 | B06 | S1 | 08 | R00 | ACF03 | 033 |  | 100 | Z2 | GA | P12 | R | A6 | MDEC | POD2 |  |  |  |  |  |  |  |  |  |  |  |  |
| GP2CO04001C0 |  | GA-P2 ; Blockworks (Common Zone) |  | 24d | 2011-03-22 A | 2011-07-30 A | GP2S107807C0, GP2S207807C0, OGNMU00001S0 | 100% |  | 2011-04-12 | 2011-05-10 |  |  | BLOCKWORKS [777 h]; BLOCKWORKS [222 m2]; Cost | GP2CO04001C0 | GA | C | P2 | CO | BL | 040 | 01 |  | BILL 6 | B06 | S1 | BL | R00 | ACF06 | 040 |  | 30 |  |  |  |  |  |  |  |  | 73 | 73 | 34410.25 | 04 |  |  |  |  |  |  |  |
| GP2CO04413C0 |  | GA-P2 ; C3 Bracket (Common Zone) |  | 136d | 2011-04-13 A | 2012-01-07 | GP1CO04408C0 SS, GP2S107807C0, GP2S207807C0, OGNMU00039S0 | 42% | 78.88d | 2011-10-15 | 2012-03-29 | 52.62d | 0d | FACADE CURTAIN WALL 3 [1651.3 h]; Cost | GP2CO04413C0 | GA | C | P2 | CO | FA | 044 | 13 | PP | BILL 6 | B06 | S1 | FC3 | R00 | ACF05 | 044 |  | 25 |  |  |  |  |  |  |  | FA |  |  | 85293.69 |  | 0 | 0 | 0 | 0 | 42 | 30 | CP |
| GP2S207807C0 |  | GA-P2 ; Cementitious Fire Proofing at POD 2 (Zone S2) |  | 12d | 2011-04-14 A | 2011-05-30 A | GP1S203399C0 | 100% |  | 2011-03-29 | 2011-04-12 |  |  | CEMENTITIOUS FIREPROOFING [2085 h]; CEMENTITIOUS FIREPROOFING [4170 m2]; Cost | GP2S207807C0 | GA | C | P2 | S2 | ST | 078 | 07 |  | BILL 6 | B06 | S1 | 04 | R00 | ACF03 | 078 |  | 100 | Z2 | GA | P12 | R | A6 | FIRE | POD2 | ST |  |  |  |  |  |  |  |  |  |  |  |
| GP2CO04405C0 |  | GA-P2 ; S2 Bracket (Car Park Zone) |  | 12d | 2011-05-08 A | 2011-06-30 A | GP2S107807C0, GP2S207807C0, PGLS103391C40 FS+24d, GP3CO04407C0 | 100% |  | 2011-07-19 | 2011-08-01 |  |  | FACADE NATURAL STONE PANEL [656 h]; Cost | GP2CO04405C0 | GA | C | P2 | CO | FA | 044 | 05 |  | BILL 6 | B06 | S1 | FS2 | R00 | ACF05 | 044 |  | 15 |  |  |  |  |  |  |  | FA |  |  | 136038.08 |  |  |  |  |  |  |  |  |
| GP2GN01802C0 |  | GA-P2 ; Temporary Enclosure | level of effort | 154.4d | 2011-05-31 A | 2012-02-05 | GP2TR09203C0 SS, GP2AB09203C0 SS, GP2FT09203C0 SS, GP2PA09203C0 SS | 33% | 103d | 2011-05-31 | 2011-12-06 | 291d | 0d | Labor General [0.6 h]; Cost |  | GA | C | P2 | GEN | FA | GEN |  | PP |  | B06 |  | TE | R00 | ACF05 | 010 |  |  |  |  |  |  |  |  |  | FA |  |  |  |  |  |  |  |  | 35.65 | 16.45 |  |
| GP2CO04003C0 |  | GA-P2 ; Plaster to Blockwork (Common Zone) |  | 23d | 2011-06-19 A | 2011-07-19 A | GP2CO04001C0 | 100% |  | 2011-06-19 | 2011-07-17 |  |  | BLOCKWORKS [24 h]; Cost | GP2CO04003C0 | GA | C | P2 | CO | BL | 040 | 03 |  | BILL 6 | B06 | S1 | BL | R00 | ACF06 | 040 |  |  |  |  |  |  |  |  |  |  |  |  | 6380.02 |  |  |  |  |  |  |  |  |
| GP2CO04410C0 |  | GA-P2 ; S2 External Partition (Car Park Zone) |  | 60d | 2011-10-01 | 2011-12-14 | GP2CO04405C0 FS+75d, GP2GN01802C0 FF |  |  |  |  | 62.25d | 0d | PARTITIONS [640.57 m]; PARTITIONS [1595.4 h]; Cost | GP2CO04410C0 | GA | C | P2 | CO | FA | 044 | 10 | PP | BILL 6 | B06 | S1 | FS2 | R00 | ACF05 | 044 |  |  |  |  |  |  |  |  |  | FA |  |  | 16004.48 |  |  |  |  |  |  |  |  |
| GP2CO04413C10 |  | GA-P2 ; C7 Bracket (Common Zone) |  | 42d | 2011-10-04 | 2011-11-24 | GP2S107807C0, GP2S207807C0, GP3CO04404C0 SS |  |  |  |  | 198.5d | 0d | FACADE CURTAIN WALL 7 [675.7 h]; Cost | GP2CO04413C0 | GA | C | P2 | CO | FA | 044 | 13 | PP | BILL 6 | B06 | S1 | FC5 | R00 | ACF05 | 044 |  |  |  |  |  |  |  |  |  | FA |  |  |  |  |  |  |  |  |  |  |  |
| GP2CO04408C10 |  | GA-P2 ; C7 Transom & Mullion (Common Zone) |  | 60d | 2011-10-25 | 2012-01-09 | GP2CO04413C10 SS+18d |  |  |  |  | 198.5d | 0d | FACADE CURTAIN WALL 7 [2701.6 h]; Cost | GP2CO04408C0 | GA | C | P2 | CO | FA | 044 | 08 | PP | BILL 6 | B06 | S1 | FC5 | R00 | ACF05 | 044 |  |  |  |  |  |  |  |  |  | FA |  |  |  |  |  |  |  |  |  |  |  |
| GP2CO04407C10 |  | GA-P2 ; CW-1 Bracket (Common Zone) |  | 60d | 2011-11-09 | 2012-01-21 | GP3CO04407C10 SS |  |  |  |  | 291d | 0d | FACADE CASCADE WALL [1088.7 h]; Cost | GP3CO04407C0 | GA | C | P2 | CO | FA | 044 | 07 | PP | BILL 6 | B06 | S1 | CW | R00 | ACF05 | 044 |  |  |  |  |  |  |  |  |  | FA |  |  |  |  |  |  |  |  |  |  |  |
| GP2CO04404C10 |  | GA-P2 ; C7 Glazing (Common Zone) |  | 60d | 2011-11-19 | 2012-01-30 | GP2CO04408C10 SS+18d, GP2GN01802C0 FF |  |  |  |  | 198.5d | 159d | FACADE CURTAIN WALL 7 [1126 h]; Cost | GP2CO04404C0 | GA | C | P2 | CO | FA | 044 | 04 | PP | BILL 6 | B06 | S1 | FC5 | R00 | ACF05 | 044 |  |  |  |  |  |  |  |  |  | FA |  |  |  |  |  |  |  |  |  |  |  |
| GP2CO04411C10 |  | GA-P2 ; CW-1 External Partition (Common Zone) |  | 60d | 2011-11-23 | 2012-02-05 | GP2CO04407C10 SS+12d, GP2GN01802C0 FF |  |  |  |  | 291d | 0d | FACADE CASCADE WALL [1088.7 h]; Cost | GP3CO04411C0 | GA | C | P2 | CO | FA | 044 | 11 | PP | BILL 6 | B06 | S1 | CW | R00 | ACF05 | 044 |  |  |  |  |  |  |  |  |  | FA |  |  |  |  |  |  |  |  |  |  |  |
| GP2CO04410C10 |  | GA-P2 ; CW-1 Stone Panel (Common Zone) |  | 66d | 2011-12-10 | 2012-02-26 | GP2CO04411C10 SS+12d |  |  |  |  | 291d | 154.6d | FACADE CASCADE WALL [5078.8 h]; Cost | GP3CO04410C0 | GA | C | P2 | CO | FA | 044 | 10 | PP | BILL 6 | B06 | S1 | CW | R00 | ACF05 | 044 |  |  |  |  |  |  |  |  |  | FA |  |  |  |  |  |  |  |  |  |  |  |
| GP2CO04407C0 |  | GA-P2 ; S2 Stone Panel (Car Park Zone) |  | 66d | 2011-12-15 | 2012-03-03 | GP2CO04410C0 SS+28d, GP2CO04410C0 FF, GP3CO04410C0 SS |  |  |  |  | 30.25d | 0d | FACADE CASCADE WALL [293.3 h]; FACADE NATURAL STONE PANEL [1369 h]; FACADE CASCADE WALL [107 m2]; FACADE NATURAL STONE PANEL [500 m2]; FACADE TOTAL QUANTITY m2 [607 m2]; Cost | GP2CO04407C0 | GA | C | P2 | CO | FA | 044 | 07 | PP | BILL 6 | B06 | S1 | FS2 | R00 | ACF05 | 044 |  |  |  |  |  |  |  |  |  | FA |  |  |  |  |  |  |  |  |  |  |  |
| GP2CO04408C0 |  | GA-P2 ; C3 Transom & Mullion (Common Zone) |  | 102d | 2012-01-07 | 2012-05-06 | GP2CO04413C0 |  |  |  |  | 52.62d | 0d | FACADE CURTAIN WALL 3 [6604.7 h]; Cost | GP2CO04408C0 | GA | C | P2 | CO | FA | 044 | 08 | PP | BILL 6 | B06 | S1 | FC3 | R00 | ACF05 | 044 |  |  |  |  |  |  |  |  |  | FA |  |  |  |  |  |  |  |  |  |  |  |
| GP2CO04404C0 |  | GA-P2 ; C3 Glazing (Common Zone) |  | 102d | 2012-02-12 | 2012-06-10 | GP2CO04408C0 SS+30d, GP2CO04408C0 FF, GP2CO04413C0 FF |  |  |  |  | 52.62d | 0d | FACADE CURTAIN WALL 3 [2507.3 h]; FACADE CURTAIN WALL 6 [780.4 h]; FACADE CURTAIN WALL 7 [314.6 h]; FACADE CURTAIN WALL 3 [916 m2]; FACADE CURTAIN WALL 6 [285 m2]; FACADE CURTAIN WALL 7 [115 m2]; FACADE TOTAL QUANTITY m2 [1316 m2]; Cost | GP2CO04404C0 | GA | C | P2 | CO | FA | 044 | 04 | PP | BILL 6 | B06 | S1 | FC3 | R00 | ACF05 | 044 |  |  |  |  |  |  |  |  |  | FA |  |  |  |  |  |  |  |  |  |  |  |
| GP2CO04401C0 |  | GA-P2 ; VE Vestibule (Common Zone) |  | 42d | 2012-06-10 | 2012-07-30 | PGLS403391C0 FS+28d, GP2CO04404C0 |  |  |  |  | 144.62d | 0d | Labor General [278.3 h]; Cost | DP3CO04403C0 | GA | C | P2 | CO | FA | 044 | 03 | PP | BILL 6 | B06 | S1 | VE | R00 | ACF05 | 044 |  |  |  |  |  |  |  |  |  | FA |  |  |  |  |  |  |  |  |  |  |  |

| ID | WBS | Activity | Duration | Start | Finish | Predecessors | Complete | Remaining | Planned start | Planned finish | Total float | Free float | Resources | Cost | Actual cost | user_number8 | user_integer1 | user_integer2 | user_number7 | Change Order # | NEW ACTIVITY ID | change id | RENZ % COMPLETE | Claimed This Month | P_811 | P_711 | CCAD BUILDING(SET) | CCAD PHASE(SET) | CCAD FLOOR(SET) | CCAD ZONE(SET) | CCAD WORK(SET) | CCAD SECTION(SET) | CCAD SERIAL No.(SET) | CCAD RESPONSIBILITY(SET) | CCAD CBS(SET) | CCAD BILL(SET) | CCAD HANDOVER(SET) | CCAD TAG(SET) | CCAD REV(SET) | CCAD (VO) | CCADACF (SET) | CCAD CSA | CCAD SSCF | Act Selector % | July2011 Target% Complete | CCAD SUB ZONE MEP(SET) | CCAD DIVISION(SET) | CCAD MEQ | IDDD |
| --- | --- | --- | --- | --- | --- | --- | --- | --- | --- | --- | --- | --- | --- | --- | --- | --- | --- | --- | --- | --- | --- | --- | --- | --- | --- | --- | --- | --- | --- | --- | --- | --- | --- | --- | --- | --- | --- | --- | --- | --- | --- | --- | --- | --- | --- | --- | --- | --- | --- |
|  | 02 | **TR Room** |  | 2011-04-18 | 2012-10-21 |  |  |  |  |  |  |  |  |  |  |  |  |  |  |  |  |  |  |  |  |  |  |  |  |  |  |  |  |  |  |  |  |  |  |  |  |  |  |  |  |  |  |  |  |
| GP2TR09201C0 |  | GA-P2 ; Metal Studs (TR RM) | 6d | 2011-04-18 A | 2011-10-03 | GP2PA09201C0, GP2S107807C0, GP2S207807C0 | 95% | 0.3d | 2011-05-10 | 2011-05-17 | 92.49d | 0d | PARTITIONS [232 h]; PARTITIONS - Metal Studs [17 m]; Cost |  |  | 0 | 0 | 0 | 0 | 313 | 885 | GP2TR09201C0 | 20 | 2074.3 | 90 | 60 | GA | C | P2 | TR | PT | 092 | 01 | PP | BILL 6 | B06 | S1 | 1F | R00 | CP | ACF06 | GP | 092 | PMS |  |  |  |  |  |
| GP2TR21115C0 |  | GA-P2 ; 2nd Fix, Gaseous Fire Suppression (TR RM) | 60d | 2011-06-08 A | 2012-07-11 | GP2TR09601C0 | 20% | 48d | 2011-08-15 | 2011-10-26 | 41.15d | 7.06d | MECHANICAL [626.4 h]; Cost [34224 AED] | 34,224 | 6,844.8 |  |  |  |  | 411 | 20001130 | GP2TR21115C0 |  | 9924.96 |  |  | GA | C | P2 | TR | ME | 211 | 15 | PP | BILL 6 | B06 | S1 | 2F | R00 | CP | ACF07 | MEP | 211 |  | 20 | 2n |  |  |  |
| GP2TR01005C0 |  | GA-P2 ; 2nd, Wall Inspection by Consultant (TR RM) | 10d | 2011-07-10 A | 2011-07-31 A | GP2TR26026C0 | 100% |  | 2011-08-01 | 2011-08-11 |  |  | Cost |  |  |  |  |  |  |  |  | GP2TR01005C0 |  |  |  |  | GA | C | P2 | TR | ME | 010 | 05 |  | BILL 6 | B06 | S1 | WI | R00 |  | ACF07 | MEP | 010 |  |  | 2n |  |  |  |
| GP2TR09203C0 |  | GA-P2 ; Partitions 1st face (TR RM) | 24d | 2011-07-10 A | 2011-10-10 | GP2TR09201C0 | 75% | 6d | 2011-07-11 | 2011-08-07 | 134.19d | 100.1d | PARTITIONS [17 m]; PARTITIONS [193 h]; Cost |  |  | 0 | 0 | 0 | 0 | 314 | 886 | GP2TR09203C0 |  |  | 50 | 45 | GA | C | P2 | TR | PT | 092 | 03 | PP | BILL 6 | B06 | S1 | 2F | R00 | CP | ACF06 | GP | 092 | P1F |  |  |  |  |  |
| GP2TR09601C0 |  | GA-P2 ; Floor Finishes (TR RM) | 11.88d | 2011-08-03 A | 2012-05-15 | GP2TR09501C0 | 10% | 10.69d | 2011-10-08 | 2011-10-20 | 41.15d | 0d | ASSORTED FLOOR FINISH [320 h]; ASSORTED FLOOR FINISH [175 m2]; Cost |  |  | 0 | 0 | 0 | 0 | 359 | 20001120 | GP2TR09601C0 |  |  | 5 | 0 | GA | C | P2 | TR | FF | 096 | 01 | PP | BILL 6 | B06 | S1 | 01 | R00 | CP | ACF06 |  | FF |  |  |  |  |  |  |
| GP2TR26026C0 |  | GA-P2 ; 2nd Fix, Conduit (TR RM) | 60d | 2011-08-10 A | 2011-12-01 | GP2TR09201C0 SS+6d | 20% | 48d | 2011-08-10 | 2011-10-20 | 92.49d | 0d | ELECTRICAL [451.2 h]; Cost [24536.7 AED] | 24,536.7 | 4,907.34 |  |  |  |  |  |  | GP2TR26026C0 |  |  | 20 | 0 | GA | C | P2 | TR | ME | 260 | 26 | PP | BILL 6 | B06 | S1 | 2F | R00 | CP | ACF07 | MEP | 260 |  | 25 | 2n |  |  |  |
| GP2TR09901C0 |  | GA-P2 ; Wall Prime & 1st coat (TR RM) | 18d | 2011-09-05 A | 2012-04-05 | GP2CO04003C0, GP2TR09205C0 | 11% | 16.09d | 2012-01-28 | 2012-02-19 | 34.09d | 0d | WALL PAINT [17 h]; WALL PAINT [20 m2]; Cost |  |  |  |  |  |  | 360 | 20001110 | GP2TR09901C0 |  |  |  |  | GA | C | P2 | TR | PA | 099 | 01 | PP | BILL 6 | B06 | S1 | 01 | R00 |  | ACF06 |  | 099 |  |  |  |  |  |  |
| GP2TR08101C0 |  | GA-P2 ; Door Frames (TR RM) | 18d | 2012-01-02 | 2012-01-22 | GP2TR09201C0, GNHE08101C0 FS+130d |  |  |  |  | 80.16d | 46.08d | ASSORTED DOORS [16 h]; Cost |  |  |  |  |  |  | 316 | 20001090 | GP2TR08101C0 |  |  |  |  | GA | C | P2 | TR | DO | 081 | 01 | PP | BILL 6 | B06 | S1 | DF | R00 |  | ACF06 |  | 081 |  |  |  | 08 |  |  |
| GP2TR09205C0 |  | GA-P2 ; Partitions Closing (TR RM) | 29.88d | 2012-02-12 | 2012-03-18 | GAFOA09208C1 FF, GP2TR01005C0, GP2TR09201C0, GP2TR09203C0, GP2TR08101C0 FF, GP2PA09205C0 SS |  |  |  |  | 34.09d | 0d | PARTITIONS [17 m]; PARTITIONS [253 h]; Cost |  |  |  |  |  |  | 315 | 887 | GP2TR09205C0 |  |  |  |  | GA | C | P2 | TR | PT | 092 | 05 | PP | BILL 6 | B06 | S1 | FF | R00 |  | ACF06 | GP | 092 | P2F |  |  |  |  |  |
| GP2TR23011C0 |  | GA-P2 ; 2nd Fix, Inst of VCD's/FD's (TR RM) | 17.88d | 2012-03-18 | 2012-04-07 | GP2TR09205C0 |  |  |  |  | 92.17d | 58.09d | MECHANICAL [673.2 h]; Cost |  |  |  |  |  |  |  |  | GP2TR23011C0 |  |  |  |  | GA | C | P2 | TR | ME | 230 | 11 | PP | BILL 6 | B06 | S1 | 2F | R00 |  | ACF07 | MEP | 230 |  | 35 | 2n |  |  |  |
| GP2TR26007C0 |  | GA-P2 ; 2nd Fix, Cable Pulling (TR RM) | 29.88d | 2012-03-18 | 2012-04-21 | GP2TR09203C0, GP2TR26026C0, GP2TR09205C0 |  |  |  |  | 110.05d | 75.96d | ELECTRICAL [1117.2 h]; Cost |  |  |  |  |  |  |  |  | GP2TR26007C0 |  |  |  |  | GA | C | P2 | TR | ME | 260 | 07 | PP | BILL 6 | B06 | S1 | 2F | R00 |  | ACF07 | MEP | 260 |  | 30 | 2n |  |  |  |
| GP2TR26009C0 |  | GA-P2 ; 2nd Fix, Inst of Equipment (DB, TR, SG,BUS) (TR RM) | 29.88d | 2012-03-18 | 2012-04-21 | GP2TR09205C0 |  |  |  |  | 38.05d | 0d | ELECTRICAL [946.8 h]; Cost |  |  |  |  |  |  |  |  | GP2TR26009C0 |  |  |  |  | GA | C | P2 | TR | ME | 260 | 09 | PP | BILL 6 | B06 | S1 | 2F | R00 |  | ACF04 | MEP | 260 |  |  | 2n |  | E |  |
| GP2TR26027C0 |  | GA-P2 ; 2nd Fix, Wiring / Cabling (TR RM) | 29.88d | 2012-03-18 | 2012-04-21 | GP2TR26026C0, GP2TR09205C0 |  |  |  |  | 80.17d | 10.21d | ELECTRICAL [242.4 h]; Cost |  |  |  |  |  |  | 417 | 1318 | GP2TR26027C0 |  |  |  |  | GA | C | P2 | TR | ME | 260 | 27 | PP | BILL 6 | B06 | S1 | 2F | R00 |  | ACF07 | MEP | 260 |  | 25 | 2n |  |  |  |
| GP2TR09501C0 |  | GA-P2 ; Ceiling Grid and Service Tile (TR RM) | 24d | 2012-04-05 | 2012-05-03 | GP2TR09205C0 SS+15d, GP2TR09901C0 |  |  |  |  | 34.09d | 0d | CEILING GRID FOR GYPSUM [38.96 h]; CEILING GRID FOR GYPSUM [3.5 m2]; Cost |  |  |  |  |  |  | 336 | 1327 | GP2TR09501C0 |  |  |  |  | GA | C | P2 | TR | CE | 095 | 01 | PP | BILL 6 | B06 | S1 | 01 | R00 |  | ACF06 |  | 095 |  |  |  |  |  | 1 |
| GP2TR09903C0 |  | GA-P2 ; Wall - Final Paint (TR RM) | 12d | 2012-04-05 | 2012-04-19 | GP2TR09901C0 |  |  |  |  | 153.84d | 119.75d | WALL PAINT [10 h]; WALL PAINT [11 m2]; Cost |  |  |  |  |  |  | 361 | 1312 | GP2TR09903C0 |  |  |  |  | GA | C | P2 | TR | PA | 099 | 03 | PP | BILL 6 | B06 | S1 | 02 | R00 |  | ACF06 |  | 099 |  |  |  |  |  |  |
| GP2TR26013C0 |  | GA-P2 ; Final Fix, Termination & Gladding of Cables (TR RM) | 18d | 2012-04-21 | 2012-05-12 | GP2TR26009C0 |  |  |  |  | 38.05d | 0d | ELECTRICAL [62.4 h]; Cost |  |  |  |  |  |  |  |  | GP2TR26013C0 |  |  |  |  | GA | C | P2 | TR | ME | 260 | 13 | PP | BILL 6 | B06 | S1 | FF | R00 |  | ACF07 | MEP | 260 |  |  | FF |  |  |  |
| GP2TR23003C0 |  | GA-P2 ; Final Fix, Inst of Grilles & Diffusers (TR RM) | 18d | 2012-05-03 | 2012-05-24 | GP2TR09501C0 |  |  |  |  | 81.84d | 47.75d | MECHANICAL [1030.8 h]; Cost |  |  |  |  |  |  |  |  | GP2TR23003C0 |  |  |  |  | GA | C | P2 | TR | ME | 230 | 03 | PP | BILL 6 | B06 | S1 | FF | R00 |  | ACF07 | MEP | 230 |  |  | FF |  |  |  |
| GP2TR23023C0 |  | GA-P2 ; 2nd Fix, Flexible ducts (TR RM) | 29.88d | 2012-05-03 | 2012-06-07 | GP2TR09205C0, GP2TR09501C0 |  |  |  |  | 34.09d | 0d | MECHANICAL [1962 h]; Cost |  |  |  |  |  |  | 412 | 20001140 | GP2TR23023C0 |  |  |  |  | GA | C | P2 | TR | ME | 230 | 23 | PP | BILL 6 | B06 | S1 | 2F | R00 |  | ACF07 | MEP | 230 |  |  | 2n |  |  |  |
| GP2TR23074C0 |  | GA-P2 ; Final Fix, Grilles, panels & diffusers (TR RM) | 18d | 2012-05-03 | 2012-05-24 | GP2TR09501C0 |  |  |  |  | 81.84d | 47.75d | MECHANICAL [1030.8 h]; Cost |  |  |  |  |  |  | 419 | 20001160 | GP2TR23074C0 |  |  |  |  | GA | C | P2 | TR | ME | 230 | 74 | PP | BILL 6 | B06 | S1 | FF | R00 |  | ACF07 | MEP | 230 |  |  | FF |  |  |  |
| GP2TR26005C0 |  | GA-P2 ; 2nd Fix, Wiring for Power/Lighting/Emergency (TR RM) | 29.88d | 2012-05-03 | 2012-06-07 | GP2TR26026C0, GP2TR26027C0, GP2TR09501C0 |  |  |  |  | 69.96d | 35.88d | ELECTRICAL [242.4 h]; Cost |  |  |  |  |  |  |  |  | GP2TR26005C0 |  |  |  |  | GA | C | P2 | TR | ME | 260 | 05 | PP | BILL 6 | B06 | S1 | 2F | R00 |  | ACF07 | MEP | 260 |  | 25 | 2n |  |  |  |
| GP2TR26076C0 |  | GA-P2 ; Final Fix, Lighting fittings (TR RM) | 18d | 2012-05-03 | 2012-05-24 | GP2TR09501C0 |  |  |  |  | 81.84d | 47.75d | ELECTRICAL [7791.6 h]; Cost |  |  |  |  |  |  | 420 | 20001170 | GP2TR26076C0 |  |  |  |  | GA | C | P2 | TR | ME | 260 | 76 | PP | BILL 6 | B06 | S1 | FF | R00 |  | ACF07 | MEP | 260 |  |  | FF |  |  |  |
| GP2TR27002C0 |  | GA-P2 ; 2nd Fix, Dressing of ELV panels (TR RM) | 29.88d | 2012-05-03 | 2012-06-07 | GP2TR09205C0, GP2TR27020C0 SS |  |  |  |  | 51.96d | 13.91d | ELECTRICAL [79.2 h]; Cost |  |  |  |  |  |  |  |  | GP2TR27002C0 |  |  |  |  | GA | C | P2 | TR | ME | 270 | 02 | PP | BILL 6 | B06 | S1 | 2F | R00 |  | ACF07 | MEP | 270 |  |  | 2n |  |  |  |
| GP2TR27020C0 |  | GA-P2 ; 2nd Fix, Inst of ELV Equipment (Panels) (TR RM) | 29.88d | 2012-05-03 | 2012-06-07 | GP2TR09205C0, GP2TR09501C0 |  |  |  |  | 51.96d | 0d | ELECTRICAL [1618.8 h]; Cost |  |  |  |  |  |  |  |  | GP2TR27020C0 |  |  |  |  | GA | C | P2 | TR | ME | 270 | 20 | PP | BILL 6 | B06 | S1 | 2F | R00 |  | ACF04 | MEP | 270 |  |  | 2n |  | E |  |
| GP2TR26015C0 |  | GA-P2 ; Final Fix, Inst of Ceiling rose (TR RM) | 18d | 2012-05-12 | 2012-06-02 | GP2TR26013C0 |  |  |  |  | 38.05d | 0d | ELECTRICAL [34.8 h]; Cost |  |  |  |  |  |  |  |  | GP2TR26015C0 |  |  |  |  | GA | C | P2 | TR | ME | 260 | 15 | PP | BILL 6 | B06 | S1 | FF | R00 |  | ACF07 | MEP | 260 |  |  | FF |  |  |  |
| GP2TR08105C0 |  | GA-P2 ; Doors (TR RM) | 18d | 2012-05-15 | 2012-06-05 | GP2TR08101C0, GP2TR09901C0, GP2TR09601C0 |  |  |  |  | 101.15d | 0d | ASSORTED DOORS [20 h]; ASSORTED DOORS [2 no]; Cost |  |  |  |  |  |  | 317 | 1325 | GP2TR08105C0 |  |  |  |  | GA | C | P2 | TR | DO | 081 | 05 | PP | BILL 6 | B06 | S1 | DR | R00 |  | ACF06 |  | 081 |  |  |  | 08 |  |  |
| GP2TR26019C0 |  | GA-P2 ; Final Fix, Inst of Light fittings (TR RM) | 18d | 2012-06-02 | 2012-06-24 | GP2TR26015C0 |  |  |  |  | 38.05d | 0d | ELECTRICAL [7791.6 h]; Cost |  |  |  |  |  |  |  |  | GP2TR26019C0 |  |  |  |  | GA | C | P2 | TR | ME | 260 | 19 | PP | BILL 6 | B06 | S1 | FF | R00 |  | ACF07 | MEP | 260 |  |  | FF |  |  |  |
| GP2TR08709C0 |  | GA-P2 ; Ironmongery (TR RM) | 12d | 2012-06-05 | 2012-06-20 | GP2TR08105C0 |  |  |  |  | 101.15d | 67.06d | IRONMONGERY [20 h]; IRONMONGERY [2 no]; Cost |  |  |  |  |  |  | 322 | 20001100 | GP2TR08709C0 |  |  |  |  | GA | C | P2 | TR | DO | 087 | 09 | PP | BILL 6 | B06 | S1 | IM | R00 |  | ACF06 |  | 087 |  |  |  | 08 |  |  |
| GP2TR23009C0 |  | GA-P2 ; 2nd Fix, Inst of VAV'S CHW connection (TR RM) | 29.88d | 2012-06-07 | 2012-07-12 | GP2TR09205C0, GP2TR23023C0 |  |  |  |  | 34.09d | 0d | MECHANICAL [788.4 h]; Cost |  |  |  |  |  |  |  |  | GP2TR23009C0 |  |  |  |  | GA | C | P2 | TR | ME | 230 | 09 | PP | BILL 6 | B06 | S1 | 2F | R00 |  | ACF07 | MEP | 230 |  | 25 | 2n |  |  |  |
| GP2TR23013C0 |  | GA-P2 ; 2nd Fix, Insulation of CHW pipe & Duct (TR RM) | 29.88d | 2012-06-14 | 2012-07-19 | GP2TR23009C0 SS+6d, GP2TR23011C0 |  |  |  |  | 34.09d | 0d | MECHANICAL [1699.2 h]; Cost |  |  |  |  |  |  |  |  | GP2TR23013C0 |  |  |  |  | GA | C | P2 | TR | ME | 230 | 13 | PP | BILL 6 | B06 | S1 | 2F | R00 |  | ACF07 | MEP | 230 |  | 35 | 2n |  |  |  |
| GP2TR27030C0 |  | GA-P2 ; Final Fix, Inst of ELV device (Detector/Speaker) (TR RM) | 18d | 2012-06-24 | 2012-07-15 | GP2TR26019C0, GP2TR27002C0 |  |  |  |  | 38.05d | 3.96d | ELECTRICAL [710.4 h]; Cost |  |  |  |  |  |  |  |  | GP2TR27030C0 |  |  |  |  | GA | C | P2 | TR | ME | 270 | 30 | PP | BILL 6 | B06 | S1 | FF | R00 |  | ACF07 | MEP | 270 |  |  | FF |  |  |  |
| GP2TR01006C0 |  | GA-P2 ; 2nd, Ceiling Inspection by Consultants (TR RM) | 0d | 2012-07-19 | 2012-07-19 | GP2TR23009C0, GP2TR23011C0, GP2TR23013C0, GP2TR26007C0, GP2TR09501C0, GP2TR27030C0, GP2TR26076C0, GP2TR26019C0, GP2TR26013C0, GP2TR23074C0, GP2TR23003C0 |  |  |  |  | 34.09d | 0d | Cost |  |  |  |  |  |  |  |  | GP2TR01006C0 |  |  |  |  | GA | C | P2 | TR | ME | 010 | 06 | PP | BILL 6 | B06 | S1 | CI | R00 |  | ACF07 | MEP | 010 |  |  | 2n |  |  |  |
| GP2TR09503C0 |  | GA-P2 ; Ceiling closure (TR RM) | 12d | 2012-07-19 | 2012-08-02 | GP2TR01006C0, GP2TR21115C0, GP2TR26005C0, GP2TR26007C0, GP2TR26026C0, GP2TR26027C0, GP2TR23023C0 |  |  |  |  | 34.09d | 0d | ASSORTED CEILING FINISH [23.37 h]; CEILING GYPSUM [1.23 h]; ASSORTED CEILING FINISH [38 m2]; CEILING GYPSUM [3 m2]; Cost |  |  |  |  |  |  | 337 | 20001080 | GP2TR09503C0 |  |  |  |  | GA | C | P2 | TR | CE | 095 | 03 | PP | BILL 6 | B06 | S1 | 02 | R00 |  | ACF06 |  | 095 |  |  |  |  |  |  |
| GP2TR09905C0 |  | GA-P2 ; Ceiling Prime & 1st coat (TR RM) | 18d | 2012-08-02 | 2012-08-26 | GP2TR09503C0 |  |  |  |  | 34.09d | 0d | CEILING PAINT [7 h]; CEILING PAINT [8 m2]; Cost |  |  |  |  |  |  | 362 | 1313 | GP2TR09905C0 |  |  |  |  | GA | C | P2 | TR | PA | 099 | 05 | PP | BILL 6 | B06 | S1 | 01 | R00 |  | ACF06 |  | 099 |  |  |  |  |  |  |
| GP2TR26017C0 |  | GA-P2 ; Final Fix, Inst of Switch/Sockets (TR RM) | 12d | 2012-08-02 | 2012-08-16 | GP2TR09901C0, GP2TR09503C0 |  |  |  |  | 34.09d | 0d | ELECTRICAL [132 h]; Cost |  |  |  |  |  |  |  |  | GP2TR26017C0 |  |  |  |  | GA | C | P2 | TR | ME | 260 | 17 | PP | BILL 6 | B06 | S1 | FF | R00 |  | ACF07 | MEP | 260 |  |  | FF |  |  |  |
| GP2TR01802C0 |  | GA-P2 ; MEP de-snag, FIREM sign-off | 18d | 2012-08-16 | 2012-09-09 | GP2TR26017C0, GP2TR23074C0, GP2TR26013C0, GP2TR23003C0, GP2TR26015C0, GP2TR26076C0, GP2TR26019C0, GP2TR27030C0 |  |  |  |  | 34.09d | 0d | TESTING & COMMISSIONING [510 h]; Cost |  |  |  |  |  |  |  |  | S05CO01851C0 |  |  |  |  | GA | C | P2 | TR | SC | 018 | 53 | PP | BILL 6 | B06 | S1 | 01 | R00 |  | ACF07 |  | 018 |  |  |  |  |  |  |
| GP2TR09907C0 |  | GA-P2 ; Ceiling - Final paint (TR RM) | 12d | 2012-08-26 | 2012-09-09 | GP2TR09905C0, GP2TR26015C0 |  |  |  |  | 34.09d | 0d | CEILING PAINT [4 h]; CEILING PAINT [4 m2]; Cost |  |  |  |  |  |  | 363 | 1314 | GP2TR09907C0 |  |  |  |  | GA | C | P2 | TR | PA | 099 | 07 | PP | BILL 6 | B06 | S1 | 02 | R00 |  | ACF06 |  | 099 |  |  |  |  |  |  |
| GP2TR01801C0 |  | GA-P2 ; Touch-up & Clean / JV inspection /CIR /De-snag | 24d | 2012-09-09 | 2012-10-07 | GP2TR01802C0, GP2TR08709C0, GP2TR09601C0, GP2TR09903C0, GP2TR09907C0 |  |  |  |  | 34.09d | 0d | TESTING & COMMISSIONING [128 h]; Cost |  |  |  |  |  |  | 396 |  | GP2TR01851C0 |  |  |  |  | GA | C | P2 | TR | SC | 018 | 51 | PP | BILL 6 | B06 | S1 | 02 | R00 |  | ACF07 |  | 018 |  |  |  |  |  |  |
| GP2TR01803C0 |  | GA-P2 ; Consultant's final de-snag inspection | 12d | 2012-10-07 | 2012-10-21 | GP2TR01801C0 |  |  |  |  | 34.09d | 3.84d | Labor General [1 h]; Cost |  |  |  |  |  |  |  |  | CP3TS01803C0 |  |  |  |  | GA | C | P2 | TR | SC | 018 | 03 | PP | BILL 6 | B06 | S1 | 03 | R00 |  | ACF07 |  | 018 |  |  |  |  |  |  |

| ID | WBS | Activity | Duration | Start | Finish | Predecessors | Complete | Remaining | Planned start | Planned finish | Total float | Free float | Resources | Cost | Actual cost | user_number8 | user_integer1 | user_integer2 | user_number7 | change id | RENZ % COMPLETE | July2011 Target% Complete | P_811 | P_711 | CCAD BUILDING(SET) | CCAD PHASE(SET) | CCAD FLOOR(SET) | CCAD ZONE(SET) | CCAD WORK(SET) | CCAD SECTION(SET) | CCAD SERIAL No.(SET) | CCAD SUB ZONE MEP(SET) | CCAD RESPONSIBILITY(SET) | CCAD CBS(SET) | CCAD BILL(SET) | CCAD HANDOVER(SET) | CCAD TAG(SET) | CCAD REV(SET) | CCAD (VO) | CCADACF (SET) | CCAD CSA | CCAD SSCF | Act Selector % | Claimed This Month | Change Order # | NEW ACTIVITY ID | CCAD DIVISION(SET) | R3 Finish | CCAD MEQ |
| --- | --- | --- | --- | --- | --- | --- | --- | --- | --- | --- | --- | --- | --- | --- | --- | --- | --- | --- | --- | --- | --- | --- | --- | --- | --- | --- | --- | --- | --- | --- | --- | --- | --- | --- | --- | --- | --- | --- | --- | --- | --- | --- | --- | --- | --- | --- | --- | --- | --- |
|  | 03 | **Auditorium, Ballroom , TLT, Staging KIT** |  | 2011-04-06 | 2013-01-13 |  |  |  |  |  |  |  |  |  |  |  |  |  |  |  |  |  |  |  |  |  |  |  |  |  |  |  |  |  |  |  |  |  |  |  |  |  |  |  |  |  |  |  |  |
| GP2AB26001C0 |  | GA-P2 ; 1st Fix, Inst of Trunking/Conduiting (Auditorium, Ballroom) | 60d | 2011-04-06 A | 2011-11-24 | GP2AB23001C0 SS, GP2S107807C0, GP2S207807C0 | 25% | 45d | 2011-07-06 | 2011-09-17 | 95.5d | 21.6d | ELECTRICAL [451.2 h]; Cost [24536.7 AED] | 24,536.7 | 6,134.17 | 0 | 0 | 0 | 0 | S08PA26001C0 | 10 | 80 | 15 | 10 | GA | C | P2 | AB | ME | 260 | 01 | 1S | PP | BILL 6 | B06 | S1 | 1F | R00 | CP | ACF04 | MEP | 260 | M1F |  |  |  |  |  |  |
| GP2AB23001C0 |  | GA-P2 ; 1st Fix, Inst. of Supports for MEP (Auditorium, Ballroom) | 36d | 2011-04-09 A | 2011-10-25 | GP2CO04003C0 | 40% | 21.6d | 2011-06-07 | 2011-07-20 | 6d | 0d | MECHANICAL [511.2 h]; Cost [28834.6 AED] | 28,834.58 | 11,533.83 | 0 | 0 | 0 | 0 | S08PA23001C0 | 10 | 100 | 15 | 10 | GA | C | P2 | AB | ME | 230 | 01 | 1S | PP | BILL 6 | B06 | S1 | 1F | R00 | CP | ACF04 | MEP | 230 | M1F | 1672.39 |  |  |  |  |  |
| GP2AB27010C0 |  | GA-P2 ; 1st Fix, Inst of Trunking for ELV system (Auditorium, Ballroom) | 60d | 2011-04-18 A | 2012-01-03 | GP2AB23001C0, GP2AB26001C0 SS+9d, GP2S107807C0, GP2S207807C0 | 10% | 54d | 2011-07-17 | 2011-09-27 | 73.9d | 0d | ELECTRICAL [597.6 h]; Cost [31671.7 AED] | 31,671.72 | 3,167.17 |  |  |  |  | S08PA27010C0 | 25 | 75 |  |  | GA | C | P2 | AB | ME | 270 | 10 | 1S | PP | BILL 6 | B06 | S1 | 1F | R00 | CP | ACF04 | MEP | 270 | M1F | 18882 |  |  |  |  |  |
| GP2AB26013C0 |  | GA-P2 ; 1st Fix, Inst of Cable Tray (Auditorium, Ballroom) | 60d | 2011-04-19 A | 2011-12-07 | GP2AB23001C0 SS, GP2S107807C0, GP2S207807C0 | 10% | 54d | 2011-07-28 | 2011-10-09 | 47.5d | 0d | ELECTRICAL [244.8 h]; Cost [13923.6 AED] | 13,923.6 | 1,392.36 |  |  |  |  | S08PA26013C0 | 10 | 75 |  |  | GA | C | P2 | AB | ME | 260 | 13 | 1S | PP | BILL 6 | B06 | S1 | 1F | R00 | CP | ACF04 | MEP | 260 | M1F | 10382.47 |  |  |  |  |  |
| GP2AB09201C0 |  | GA-P2 ; Metal Studs (Auditorium, Ballroom) | 36d | 2011-06-08 A | 2011-10-10 | GP2AB23001C0 SS | 75% | 9d | 2011-08-25 | 2011-10-08 | 6d | 0d | PARTITIONS [3664 h]; PARTITIONS - Metal Studs [267 m]; Cost |  |  | 0 | 0 | 0 | 0 | S08PA09201C0 |  |  | 25 | 15 | GA | C | P2 | AB | PT | 092 | 01 |  | PP | BILL 6 | B06 | S1 | 1F | R00 | CP | ACF06 | GP | 092 |  | 31114.78 | 313 | 944 |  |  |  |
| GP2AB09203C0 |  | GA-P2 ; Partitions 1st face (Auditorium, Ballroom) | 45d | 2011-08-03 A | 2011-11-24 | GP2AB09201C0 | 20% | 36d | 2011-10-04 | 2011-11-30 | 74.5d | 33d | PARTITIONS [267 m]; PARTITIONS [2869 h]; Cost |  |  | 0 | 0 | 0 | 0 | S08PA09203C0 |  |  | 5 | 0 | GA | C | P2 | AB | PT | 092 | 03 |  | PP | BILL 6 | B06 | S1 | 2F | R00 | CP | ACF06 | GP | 092 | P1F |  | 314 | 945 |  |  |  |
| GP2AB26009C0 |  | GA-P2 ; 2nd Fix, Inst of Wall conduites (Auditorium, Ballroom) | 60d | 2011-08-10 A | 2011-12-11 | GP2AB09201C0 | 20% | 48d | 2011-10-04 | 2011-12-19 | 62.5d | 0d | ELECTRICAL [451.2 h]; Cost [24536.7 AED] | 24,536.7 | 4,907.34 | 0 | 0 | 0 | 0 | S08PA26009C0 |  | 25 | 15 | 0 | GA | C | P2 | AB | ME | 260 | 09 | 2n | PP | BILL 6 | B06 | S1 | 2F | R00 | CP | ACF07 | MEP | 260 |  |  |  |  |  |  |  |
| GP2AB21111C0 |  | GA-P2 ; 1st Fix, Inst of Sprinkler main pipe (Auditorium, Ballroom) | 54d | 2011-09-05 A | 2011-11-30 | GP2AB22005C0 SS+12d, GP2AB23001C0 SS | 10% | 48.6d | 2011-09-24 | 2011-11-29 | 47.5d | 0d | MECHANICAL [541.2 h]; Cost [29558 AED] | 29,557.99 | 2,955.8 |  |  |  |  | S08PA21111C0 |  | 98 |  |  | GA | C | P2 | AB | ME | 211 | 11 | 1S | PP | BILL 6 | B06 | S1 | 1F | R00 |  | ACF04 | MEP | 211 | M1F | 6860.47 |  |  |  |  |  |
| GP2AB21117C0 |  | GA-P2 ; 1st Fix, Inst of Sprinkler branch pipe (Auditorium, Ballroom) | 54d | 2011-09-05 A | 2012-01-29 | GP2AB21111C0 | 10% | 48.6d | 2011-11-30 | 2012-02-02 | 106.3d | 64.8d | MECHANICAL [931.2 h]; Cost [50874.3 AED] | 50,874.31 | 5,087.43 |  |  |  |  | S08PA21117C0 |  | 90 |  |  | GA | C | P2 | AB | ME | 211 | 17 | 1S | PP | BILL 6 | B06 | S1 | 1F | R00 |  | ACF04 | MEP | 211 | M1F | 5897.83 |  |  |  |  |  |
| GP2AB22005C0 |  | GA-P2 ; 1st Fix, Inst of Water supply pipe (ceiling) (Auditorium, Ballroom) | 54d | 2011-09-05 A | 2011-11-23 | GP2AB22019C0 SS+7d, GP2AB23001C0 SS | 20% | 43.2d | 2011-09-10 | 2011-11-14 | 47.5d | 0d | PLUMBING [500.4 h]; Cost [27361.7 AED] | 27,361.72 | 5,472.34 |  |  |  |  | S08PA22005C0 |  | 75 |  |  | GA | C | P2 | AB | ME | 220 | 05 | 1S | PP | BILL 6 | B06 | S1 | 1F | R00 |  | ACF04 | MEP | 220 | M1F |  |  |  |  |  |  |
| GP2AB22019C0 |  | GA-P2 ; 1st Fix, Inst of Drainage pipe (ceiling) (Auditorium, Ballroom) | 54d | 2011-09-05 A | 2011-11-30 | GP2AB23001C0 SS, GP2AB26013C0 SS+10d | 10% | 48.6d | 2011-09-01 | 2011-11-02 | 47.5d | 0d | PLUMBING [644.4 h]; Cost [35208.5 AED] | 35,208.51 | 3,520.85 |  |  |  |  | S08PA22019C0 |  | 85 |  |  | GA | C | P2 | AB | ME | 220 | 19 | 1S | PP | BILL 6 | B06 | S1 | 1F | R00 |  | ACF04 | MEP | 220 | M1F |  |  |  |  |  |  |
| GP2AB23017C0 |  | GA-P2 ; 1st Fix, Inst of CHW pipe (Auditorium, Ballroom) | 54d | 2011-10-01 | 2011-12-07 | GP2AB21111C0 SS+12d, GP2AB23001C0 SS |  |  |  |  | 47.5d | 0d | MECHANICAL [1650 h]; Cost |  |  |  |  |  |  | S08PA23017C0 |  | 80 |  |  | GA | C | P2 | AB | ME | 230 | 17 | 1S | PP | BILL 6 | B06 | S1 | 1F | R00 |  | ACF04 | MEP | 230 | M1F | 5226.31 |  |  |  |  |  |
| GP2AB22011C0 |  | GA-P2 ; 2nd Fix, Drainage/Water pipe (wall) (Auditorium, Ballroom) | 48d | 2011-10-11 | 2011-12-11 | GP2AB09201C0 |  |  |  |  | 62.5d | 0d | PLUMBING [644.4 h]; Cost |  |  |  |  |  |  | S08PA22011C0 |  | 25 |  |  | GA | C | P2 | AB | ME | 220 | 11 | 2n | PP | BILL 6 | B06 | S1 | 2F | R00 |  | ACF07 | MEP | 220 |  | 2041.75 |  |  |  |  |  |
| GP2AB23023C0 |  | GA-P2 ; 1st Fix, Inst of Main Ducting (Auditorium, Ballroom) | 54d | 2011-10-25 | 2012-01-03 | GP2AB23001C0, GP2AB23017C0 SS+7d |  |  |  |  | 73.9d | 0d | MECHANICAL [7458 h]; Cost |  |  |  |  |  |  | S08PA23023C0 |  | 75 |  |  | GA | C | P2 | AB | ME | 230 | 23 | 1S | PP | BILL 6 | B06 | S1 | 1F | R00 |  | ACF04 | MEP | 230 | M1F | 47241.8 |  |  |  |  |  |
| GP2AB23009C0 |  | GA-P2 ; 2nd Fix, Inst of VAV'S CHW connection (Auditorium, Ballroom) | 48d | 2011-12-08 | 2012-02-02 | GP2AB23017C0 |  |  |  |  | 47.5d | 0d | MECHANICAL [788.4 h]; Cost |  |  |  |  |  |  | S08PA23009C0 |  |  |  |  | GA | C | P2 | AB | ME | 230 | 09 | 2n | PP | BILL 6 | B06 | S1 | 2F | R00 |  | ACF07 | MEP | 230 |  |  |  |  |  |  |  |
| GP2AB01005C0 |  | GA-P2 ; 2nd, Wall Inspection by Consultant (Auditorium, Ballroom) | 0d | 2011-12-12 | 2011-12-12 | GP2AB22011C0, GP2AB26009C0 |  |  |  |  | 62.5d | 21d | Cost |  |  |  |  |  |  | S08PA01005C0 |  |  |  |  | GA | C | P2 | AB | ME | 010 | 05 | 2n | PP | BILL 6 | B06 | S1 | WI | R00 |  | ACF07 | MEP | 010 |  |  |  |  |  |  |  |
| GP2AB08103C0 |  | GA-P2 ; Door Frames (Auditorium, Ballroom) | 36d | 2012-01-02 | 2012-02-13 | GP2AB09201C0 SS+14d, GNHE08101C0 FS+130d |  |  |  |  | 57.5d | 16d | ASSORTED DOORS [235 h]; Cost |  |  |  |  |  |  | S08PA08103C0 |  |  |  |  | GA | C | P2 | AB | DO | 081 | 03 |  | PP | BILL 6 | B06 | S1 | DF | R00 |  | ACF06 |  | 081 |  |  | 316 | 947 | 08 |  |  |
| GP2AB23008C0 |  | GA-P2 ; 1st Fix, Inst of VCD's/FD's (Auditorium, Ballroom) | 54d | 2012-01-03 | 2012-03-07 | GP2AB23023C0 |  |  |  |  | 73.9d | 32.4d | MECHANICAL [673.2 h]; Cost |  |  |  |  |  |  | S08PA23008C0 |  |  |  |  | GA | C | P2 | AB | ME | 230 | 08 | 1S | PP | BILL 6 | B06 | S1 | 1F | R00 |  | ACF04 | MEP | 230 | M1F |  |  |  |  |  |  |
| GP2AB27001C0 |  | GA-P2 ; 1st Fix, Wiring/ Cabling work (Auditorium, Ballroom) | 54d | 2012-01-03 | 2012-03-07 | GP2AB26001C0, GP2AB26013C0, GP2AB27010C0 |  |  |  |  | 73.9d | 32.4d | ELECTRICAL [242.4 h]; Cost |  |  |  |  |  |  | S08PA27001C0 |  | 50 |  |  | GA | C | P2 | AB | ME | 270 | 01 | 1S | PP | BILL 6 | B06 | S1 | 1F | R00 |  | ACF04 | MEP | 270 | M1F | 7954.47 |  |  |  |  |  |
| GP2AB09205C0 |  | GA-P2 ; Partitions Closing (Auditorium, Ballroom) | 48d | 2012-01-07 | 2012-03-03 | GAFOA09208C1 FF, GP2AB01005C0, GP2AB09203C0, GP2AB22005C0, GP2AB22019C0, GP2CO04407C0 FF, GAFCI22001R02 FS+58d, GP2AB08103C0 FF |  |  |  |  | 41.5d | 0d | PARTITIONS [267 m]; PARTITIONS [3671 h]; Cost |  |  |  |  |  |  | S08PA09205C0 |  |  |  |  | GA | C | P2 | AB | PT | 092 | 05 |  | PP | BILL 6 | B06 | S1 | FF | R00 |  | ACF06 | GP | 092 | P2F |  | 315 | 946 |  |  |  |
| GP2AB23015C0 |  | GA-P2 ; 2nd Fix, Insulation of CHW pipe & Duct (Auditorium, Ballroom) | 54d | 2012-02-05 | 2012-04-07 | GP2AB23009C0, GP2AB23017C0, GP2AB23023C0 |  |  |  |  | 47.5d | 6d | MECHANICAL [1699.2 h]; Cost |  |  |  |  |  |  | S08PA23015C0 |  |  |  |  | GA | C | P2 | AB | ME | 230 | 15 | 2n | PP | BILL 6 | B06 | S1 | 2F | R00 |  | ACF07 | MEP | 230 |  |  |  |  |  |  |  |
| GP2AB09602C0 |  | GA-P2 ; Auditorium Floor Framing (Auditorium, Ballroom) | 12d | 2012-03-04 | 2012-03-17 | GP2AB09205C0, GAFCI22002R02 FS+65d |  |  |  |  | 179.5d | 138d | ASSORTED FLOOR FINISH [144 h]; Cost |  |  |  |  |  |  | S08PA09201C0 |  |  |  |  | GA | C | P2 | AB | FF | 096 | 02 |  | PP | BILL 6 | B06 | S1 | 01 | R00 |  | ACF06 |  | FF |  |  | 313 | 944 |  | R3 |  |
| GP2AB09901C0 |  | GA-P2 ; Wall Prime & 1st coat (Auditorium, Ballroom) | 36d | 2012-03-04 | 2012-04-14 | GP2AB09205C0 |  |  |  |  | 41.5d | 0d | WALL PAINT [244 h]; WALL PAINT [303 m2]; Cost |  |  |  |  |  |  | S08PA09901C0 |  |  |  |  | GA | C | P2 | AB | PA | 099 | 01 |  | PP | BILL 6 | B06 | S1 | 01 | R00 |  | ACF06 |  | 099 |  |  | 328 | 956 |  |  |  |
| GP2AB23011C0 |  | GA-P2 ; 2nd Fix, Inst of Equipment (FCU,FAN) (Auditorium, Ballroom) | 48d | 2012-03-04 | 2012-04-28 | GP2AB09205C0 |  |  |  |  | 143.5d | 96d | MECHANICAL [406.8 h]; Cost |  |  |  |  |  |  | S08PA23011C0 |  |  |  |  | GA | C | P2 | AB | ME | 230 | 11 | 2n | PP | BILL 6 | B06 | S1 | 2F | R00 |  | ACF04 | MEP | 230 |  |  |  |  |  |  | H |
| GP2AB26005C0 |  | GA-P2 ; 2nd Fix, Wiring for Power/Lighting/Emergency (Auditorium, Ballroom) | 48d | 2012-03-04 | 2012-04-28 | GP2AB09205C0 |  |  |  |  | 113.5d | 0d | ELECTRICAL [242.4 h]; Cost |  |  |  |  |  |  | S08PA26005C0 |  |  |  |  | GA | C | P2 | AB | ME | 260 | 05 | 2n | PP | BILL 6 | B06 | S1 | 2F | R00 |  | ACF07 | MEP | 260 |  |  |  |  |  |  |  |
| GP2AB26007C0 |  | GA-P2 ; 2nd Fix, Cable Pulling (Auditorium, Ballroom) | 48d | 2012-03-04 | 2012-04-28 | GP2AB09201C0, GP2AB09205C0 |  |  |  |  | 184d | 142.5d | ELECTRICAL [1117.2 h]; Cost |  |  |  |  |  |  | S08PA26007C0 |  | 25 |  |  | GA | C | P2 | AB | ME | 260 | 07 | 2n | PP | BILL 6 | B06 | S1 | 2F | R00 |  | ACF07 | MEP | 260 |  |  |  |  |  |  |  |
| GP2AB26011C0 |  | GA-P2 ; 2nd Fix, Inst of Equipment (DB) (Auditorium, Ballroom) | 60d | 2012-03-04 | 2012-05-12 | GP2AB09205C0 |  |  |  |  | 118d | 42d | ELECTRICAL [524.4 h]; Cost |  |  |  |  |  |  | S08PA26011C0 |  |  |  |  | GA | C | P2 | AB | ME | 260 | 11 | 2n | PP | BILL 6 | B06 | S1 | 2F | R00 |  | ACF04 | MEP | 260 |  |  |  |  |  |  | E |
| GP2AB26053C0 |  | GA-P2 ; 2nd Fix, Wiring / Cabling (Auditorium, Ballroom) | 48d | 2012-03-04 | 2012-04-28 | GP2AB09203C0, GP2AB09205C0 |  |  |  |  | 184d | 142.5d | ELECTRICAL [242.4 h]; Cost |  |  |  |  |  |  | S08PA26053C0 |  |  |  |  | GA | C | P2 | AB | ME | 260 | 53 | 2n | PP | BILL 6 | B06 | S1 | 2F | R00 |  | ACF07 | MEP | 260 |  |  | 389 | 977 |  |  |  |
| GP2AB05501C0 |  | GA-P2 ; Handrails & balustrade (Auditorium, Ballroom) | 36d | 2012-04-15 | 2012-05-26 | GP2AB09901C0 |  |  |  |  | 214d | 172.5d | SECONDARY STEEL [1229 h]; Cost |  |  |  |  |  |  | S08PA05501C0 |  |  |  |  | GA | C | P2 | AB | SW | 055 | 01 |  | PP | BILL 6 | B06 | S1 | 01 | R00 |  | ACF03 |  | a |  |  |  |  |  |  |  |
| GP2AB09202C0 |  | GA-P2 ; Ballroom Auto Folding partition installation (Auditorium, Ballroom) | 24d | 2012-04-15 | 2012-05-12 | GP2AB09501C0 SS |  |  |  |  | 206d | 126d | PARTITIONS [2047 h]; PARTITIONS [212.97 m]; Cost |  |  |  |  |  |  | S08PA09201C0 |  |  |  |  | GA | C | P2 | AB | PT | 092 | 02 |  | PP | BILL 6 | B06 | S1 | FP | R00 |  | ACF06 | GP | 092 |  |  | 313 | 944 |  |  |  |
| GP2AB09501C0 |  | GA-P2 ; Ceiling Grid and Service Tile (Auditorium, Ballroom) | 60d | 2012-04-15 | 2012-06-24 | GP2AB09205C0 SS+15d, GP2AB21117C0, GP2AB23008C0, GP2AB23009C0, GP2AB23015C0, GP2AB27001C0, GAFCI22002R02 FS+65d, GP2AB09901C0 |  |  |  |  | 41.5d | 0d | CEILING GRID FOR GYPSUM [983.74 h]; CEILING GRID FOR GYPSUM [83.96 m2]; Cost |  |  |  |  |  |  | S08PA09501C0 |  |  |  |  | GA | C | P2 | AB | CE | 095 | 01 |  | PP | BILL 6 | B06 | S1 | 01 | R00 |  | ACF06 |  | 095 |  |  | 323 | 952 |  | R3 |  |
| GP2AB11002C0 |  | GA-P2 ; Auditorium Desk installation (Auditorium, Ballroom) | 36d | 2012-04-15 | 2012-05-26 | GP2AB09901C0 |  |  |  |  | 178d | 60d | FF&E [29 h]; FF&E [9.72 no]; Cost |  |  |  |  |  |  | S08PA09201C0 |  |  |  |  | GA | C | P2 | AB | PT | 110 | 02 |  | PP | BILL 6 | B06 | S1 | 10 | R00 |  | ACF08 |  | f |  |  | 313 | 944 |  |  |  |
| GP2AB27020C0 |  | GA-P2 ; 2nd Fix, Inst of ELV Equipment (Panels) (Auditorium, Ballroom) | 60d | 2012-04-22 | 2012-07-01 | GP2AB09205C0, GP2AB09501C0 SS+6d |  |  |  |  | 76d | 0d | ELECTRICAL [1618.8 h]; Cost |  |  |  |  |  |  | S08PA27020C0 |  |  |  |  | GA | C | P2 | AB | ME | 270 | 20 | 2n | PP | BILL 6 | B06 | S1 | 2F | R00 |  | ACF04 | MEP | 270 |  |  |  |  |  |  | E |
| GP2AB26015C0 |  | GA-P2 ; Final Fix, Termination & Gladding of Cables (Auditorium, Ballroom) | 30d | 2012-04-29 | 2012-06-02 | GP2AB26005C0 |  |  |  |  | 113.5d | 66d | ELECTRICAL [62.4 h]; Cost |  |  |  |  |  |  | S08PA26015C0 |  |  |  |  | GA | C | P2 | AB | ME | 260 | 15 | FF | PP | BILL 6 | B06 | S1 | FF | R00 |  | ACF07 | MEP | 260 |  |  |  |  |  |  |  |
| GP2AB09601C0 |  | GA-P2 ; Flooring (Rubber & etc) (Auditorium, Ballroom) | 54d | 2012-06-25 | 2012-08-28 | GP2AB09205C0, GP2AB09602C0 FF, GAFCI22002R02 FS+65d, GP2CO04404C0, GP2AB09501C0 |  |  |  |  | 41.5d | 0d | RUBBER FLOOR [64 h]; RUBBER FLOOR [153 m2]; Cost |  |  |  |  |  |  | S08PA09601C0 |  |  |  |  | GA | C | P2 | AB | FF | 096 | 01 |  | PP | BILL 6 | B06 | S1 | 03 | R00 |  | ACF06 |  | RF |  |  | 326 | 955 |  | R3 |  |
| GP2AB09905C0 |  | GA-P2 ; Ceiling Prime & 1st coat (Auditorium, Ballroom) | 36d | 2012-06-25 | 2012-08-05 | GP2AB09501C0 |  |  |  |  | 118d | 0d | CEILING PAINT [149 h]; CEILING PAINT [186 m2]; Cost |  |  |  |  |  |  | S08PA09905C0 |  |  |  |  | GA | C | P2 | AB | PA | 099 | 05 |  | PP | BILL 6 | B06 | S1 | 01 | R00 |  | ACF06 |  | 099 |  |  | 330 | 958 |  |  |  |
| GP2AB21115C0 |  | GA-P2 ; 2nd Fix, Inst of Sprinkler droppers (Auditorium, Ballroom) | 48d | 2012-06-25 | 2012-08-21 | GP2AB09501C0 |  |  |  |  | 47.5d | 0d | MECHANICAL [1734 h]; Cost |  |  |  |  |  |  | S08PA21115C0 |  |  |  |  | GA | C | P2 | AB | ME | 211 | 15 | 2n | PP | BILL 6 | B06 | S1 | 2F | R00 |  | ACF07 | MEP | 211 |  |  |  |  |  |  |  |
| GP2AB23021C0 |  | GA-P2 ; 2nd Fix, Inst of Flexible Duct & Plenum boxes (Auditorium, Ballroom) | 54d | 2012-06-25 | 2012-08-28 | GP2AB09205C0, GP2AB09501C0 |  |  |  |  | 53.5d | 0d | MECHANICAL [1962 h]; Cost |  |  |  |  |  |  | S08PA23021C0 |  |  |  |  | GA | C | P2 | AB | ME | 230 | 21 | 2n | PP | BILL 6 | B06 | S1 | 2F | R00 |  | ACF07 | MEP | 230 |  |  |  |  |  |  |  |
| GP2AB26017C0 |  | GA-P2 ; Final Fix, Inst of Ceiling rose (Auditorium, Ballroom) | 30d | 2012-06-25 | 2012-07-29 | GP2AB09501C0 |  |  |  |  | 47.5d | 0d | ELECTRICAL [34.8 h]; Cost |  |  |  |  |  |  | S08PA26017C0 |  |  |  |  | GA | C | P2 | AB | ME | 260 | 17 | FF | PP | BILL 6 | B06 | S1 | FF | R00 |  | ACF07 | MEP | 260 |  |  |  |  |  |  |  |
| GP2AB27002C0 |  | GA-P2 ; 2nd Fix, Wiring Droppers (Auditorium, Ballroom) | 48d | 2012-06-25 | 2012-08-21 | GP2AB09501C0 |  |  |  |  | 47.5d | 0d | ELECTRICAL [242.4 h]; Cost |  |  |  |  |  |  | S08PA27002C0 |  |  |  |  | GA | C | P2 | AB | ME | 270 | 02 | 2n | PP | BILL 6 | B06 | S1 | 2F | R00 |  | ACF07 | MEP | 270 |  |  |  |  |  |  |  |
| GP2AB09701C0 |  | GA-P2 ; Wall finishes (ST, WD, WC) (Auditorium, Ballroom) | 54d | 2012-07-02 | 2012-09-04 | GP2AB26011C0, GP2AB27020C0, GAFCI22002R02 FS+164d, GP2CO04404C0 |  |  |  |  | 76d | 0d | ASSORTED WALL FINISH [785 h]; ASSORTED WALL FINISH [902 m2]; Cost |  |  |  |  |  |  | S08PA09701C0 |  |  |  |  | GA | C | P2 | AB | WF | 097 | 01 |  | PP | BILL 6 | B06 | S1 | 01 | R00 |  | ACF06 |  | 097 |  |  | 105 | 1002 |  |  |  |
| GP2AB21113C0 |  | GA-P2 ; Final Fix, Inst of Sprinklers head/ Extinguisher (Auditorium, Ballroom) | 30d | 2012-07-02 | 2012-08-05 | GP2AB09501C0, GP2AB21115C0 SS+6d |  |  |  |  | 59.5d | 12d | MECHANICAL [297.6 h]; Cost |  |  |  |  |  |  | S08PA21113C0 |  |  |  |  | GA | C | P2 | AB | ME | 211 | 13 | FF | PP | BILL 6 | B06 | S1 | FF | R00 |  | ACF07 | MEP | 211 |  |  |  |  |  |  |  |
| GP2AB23019C0 |  | GA-P2 ; Final Fix, Inst of Grilles & Diffusers (Auditorium, Ballroom) | 36d | 2012-07-02 | 2012-08-12 | GP2AB09501C0, GP2AB23021C0 SS+6d |  |  |  |  | 53.5d | 6d | MECHANICAL [1030.8 h]; Cost |  |  |  |  |  |  | S08PA23019C0 |  |  |  |  | GA | C | P2 | AB | ME | 230 | 19 | FF | PP | BILL 6 | B06 | S1 | FF | R00 |  | ACF07 | MEP | 230 |  |  |  |  |  |  |  |
| GP2AB26003C0 |  | GA-P2 ; Final Fix, Inst of Light fittings (Auditorium, Ballroom) | 42d | 2012-07-02 | 2012-08-21 | GP2AB09501C0, GP2AB26017C0 SS+6d |  |  |  |  | 47.5d | 0d | ELECTRICAL [7791.6 h]; Cost |  |  |  |  |  |  | S08PA26003C0 |  |  |  |  | GA | C | P2 | AB | ME | 260 | 03 | FF | PP | BILL 6 | B06 | S1 | FF | R00 |  | ACF07 | MEP | 260 |  |  |  |  |  |  |  |
| GP2AB27030C0 |  | GA-P2 ; Final Fix, Inst of ELV devise (Detector/Speaker) (Auditorium, Ballroom) | 30d | 2012-07-02 | 2012-08-05 | GP2AB09501C0, GP2AB27002C0 SS+6d |  |  |  |  | 59.5d | 12d | ELECTRICAL [710.4 h]; Cost |  |  |  |  |  |  | S08PA27030C0 |  |  |  |  | GA | C | P2 | AB | ME | 270 | 30 | FF | PP | BILL 6 | B06 | S1 | FF | R00 |  | ACF07 | MEP | 270 |  |  |  |  |  |  |  |
| GP2AB09903C0 |  | GA-P2 ; Wall Final Paint (Auditorium, Ballroom) | 36d | 2012-08-06 | 2012-09-18 | GP2AB09901C0, GP2AB09905C0, GP2AB11002C0 |  |  |  |  | 118d | 76.5d | WALL PAINT [132 h]; WALL PAINT [163 m2]; Cost |  |  |  |  |  |  | S08PA09903C0 |  |  |  |  | GA | C | P2 | AB | PA | 099 | 03 |  | PP | BILL 6 | B06 | S1 | 02 | R00 |  | ACF06 |  | 099 |  |  | 329 | 957 |  |  |  |
| GP2AB01006C0 |  | GA-P2 ; 2nd, Ceiling Inspection by Consultants (Auditorium, Ballroom) | 0d | 2012-08-22 | 2012-08-22 | GP2AB21115C0, GP2AB23009C0, GP2AB23011C0, GP2AB23015C0, GP2AB27002C0, GP2AB09501C0, GP2AB21113C0, GP2AB23019C0, GP2AB26003C0, GP2AB26017C0, GP2AB27030C0, GP2AB26015C0 |  |  |  |  | 47.5d | 6d | Cost |  |  |  |  |  |  | S08PA01006C0 |  |  |  |  | GA | C | P2 | AB | ME | 010 | 06 | 2n | PP | BILL 6 | B06 | S1 | CI | R00 |  | ACF07 | MEP | 010 |  |  |  |  |  |  |  |
| GP2AB06101C0 |  | GA-P2 ; Wood / caseworks (Auditorium, Ballroom) | 40.5d | 2012-08-29 | 2012-10-15 | GP2AB01006C0, GP2AB09501C0, GP2AB09901C0, GP2CO04404C0, GP2CO04404C10, CAFWA00113M0 FS+12d, GP2AB09601C0 |  |  |  |  | 41.5d | 0d | Labor General [1 h]; Cost |  |  |  |  |  |  | DP2KS06101C0 |  |  |  |  | GA | C | P2 | AB | WO | 061 | 01 |  | PP | BILL 6 | B06 | S1 | WW | R00 |  | ACF06 |  | 061 |  |  | 332 | 960 |  |  |  |
| GP2AB08107C0 |  | GA-P2 ; Doors (Auditorium, Ballroom) | 36d | 2012-08-29 | 2012-10-09 | GP2AB08103C0, GP2AB09901C0, GP2AB09601C0 |  |  |  |  | 80d | 0d | ASSORTED DOORS [340 h]; ASSORTED DOORS [34 no]; Cost |  |  |  |  |  |  | S08PA08107C0 |  |  |  |  | GA | C | P2 | AB | DO | 081 | 07 |  | PP | BILL 6 | B06 | S1 | DR | R00 |  | ACF06 |  | 081 |  |  | 317 | 948 | 08 |  |  |
| GP2AB09301C0 |  | GA-P2 ; SUF & Floor Tile installation (Auditorium, Ballroom) | 18d | 2012-08-29 | 2012-09-18 | GP2AB09601C0 |  |  |  |  | 82d | 0d | ASSORTED FLOOR FINISH [1424 h]; ASSORTED FLOOR FINISH [791 m2]; Cost |  |  |  |  |  |  | S08PA09201C0 |  |  |  |  | GA | C | P2 | AB | FF | 093 | 01 |  | PP | BILL 6 | B06 | S1 | 06 | R00 |  | ACF06 |  | CT |  |  | 313 | 944 |  |  |  |
| GP2AB11009C0 |  | GA-P2 ; Signage (Auditorium, Ballroom) | 12.25d | 2012-09-05 | 2012-09-19 | GP2AB09701C0 |  |  |  |  | 117.75d | 76.25d | SIGNAGES [46 h]; SIGNAGES [46.48 no]; Cost |  |  |  |  |  |  | S08PA11009C0 |  |  |  |  | GA | C | P2 | AB | SA | 110 | 09 |  | PP | BILL 6 | B06 | S1 | 09 | R00 |  | ACF08 |  | c |  |  | 322 | 951 | 08 |  |  |
| GP2AB11003C0 |  | GA-P2 ; Kitchen Equipment & Sanitary installation (Auditorium, Ballroom) | 36d | 2012-09-19 | 2012-11-01 | GP2AB09301C0, A10230 FS+148d |  |  |  |  | 82d | 40.5d | FF&E [162 h]; FF&E [54.14 no]; Cost |  |  |  |  |  |  | S08PA09201C0 |  |  |  |  | GA | C | P2 | AB | EQ | 110 | 03 |  | PP | BILL 6 | B06 | S1 | 06 | R00 |  | ACF08 | GP | KE |  |  | 313 | 944 |  |  |  |
| GP2AB08709C0 |  | GA-P2 ; Ironmongery (Auditorium, Ballroom) | 20d | 2012-10-10 | 2012-11-04 | GP2AB08107C0, GP2AB09202C0 |  |  |  |  | 80d | 38.5d | IRONMONGERY [240 h]; IRONMONGERY [24 no]; Cost |  |  |  |  |  |  | S08PA08709C0 |  |  |  |  | GA | C | P2 | AB | DO | 087 | 09 |  | PP | BILL 6 | B06 | S1 | IM | R00 |  | ACF06 |  | 087 |  |  | 322 | 951 | 08 |  |  |
| GP2AB09503C0 |  | GA-P2 ; Ceiling closure - ACT/Gypsum (Auditorium, Ballroom) | 24d | 2012-10-15 | 2012-11-14 | GAFOA09507C1, GP2AB01006C0, GP2AB21115C0, GP2AB26005C0, GP2AB27001C0, GP2AB27002C0, GAFCI22002R02 FS+65d, GP2AB06101C0, GP2AB09701C0, GP2AB23021C0, GP2AB26053C0, GP2AB26007C0 |  |  |  |  | 41.5d | 0d | ASSORTED CEILING FINISH [554.73 h]; CEILING GYPSUM [27.47 h]; ASSORTED CEILING FINISH [902 m2]; CEILING GYPSUM [84 m2]; Cost |  |  |  |  |  |  | S08PA09503C0 |  |  |  |  | GA | C | P2 | AB | CE | 095 | 03 |  | PP | BILL 6 | B06 | S1 | 02 | R00 |  | ACF06 |  | 095 |  |  | 324 | 953 |  | R3 |  |
| GP2AB09671C1 |  | GA-P2, Carpet Tile Finish (Auditorium) | 0d | 2012-11-14 | 2012-11-14 | GP2AB09903C0 SS, GP2AB09907C0 SS |  |  |  |  | 71.5d | 30d | Cost |  |  |  |  |  |  |  |  |  |  |  | GA | C | P2 | AB | FF | 096 |  |  |  |  | B06 |  |  | R00 |  | ACF06 | CPT | CPT |  |  |  |  |  |  |  |
| GP2AB09907C0 |  | GA-P2 ; Ceiling Final paint (Auditorium, Ballroom) | 18d | 2012-11-14 | 2012-12-08 | GP2AB09601C0, GP2AB09905C0, GP2AB09503C0 |  |  |  |  | 53.5d | 0d | CEILING PAINT [81 h]; CEILING PAINT [100 m2]; Cost |  |  |  |  |  |  | S08PA09907C0 |  |  |  |  | GA | C | P2 | AB | PA | 099 | 07 |  | PP | BILL 6 | B06 | S1 | 02 | R00 |  | ACF06 |  | 099 |  |  | 331 | 959 |  |  |  |
| GP2AB26019C0 |  | GA-P2 ; Final Fix, Inst of Switch/Sockets (Auditorium, Ballroom) | 18d | 2012-11-14 | 2012-12-08 | GP2AB09901C0, GP3TS01801C0, GP2AB09503C0 |  |  |  |  | 41.5d | 0d | ELECTRICAL [132 h]; Cost |  |  |  |  |  |  | S08PA26019C0 |  |  |  |  | GA | C | P2 | AB | ME | 260 | 19 | FF | PP | BILL 6 | B06 | S1 | FF | R00 |  | ACF07 | MEP | 260 |  |  |  |  |  |  |  |

| ID | WBS | Activity | Duration | Start | Finish | Predecessors | Complete | Remaining | Planned start | Planned finish | Total float | Free float | Resources | Cost | Actual cost | change id | CCAD BUILDING(SET) | CCAD PHASE(SET) | CCAD FLOOR(SET) | CCAD ZONE(SET) | CCAD WORK(SET) | CCAD SECTION(SET) | CCAD SERIAL No.(SET) | CCAD RESPONSIBILITY(SET) | CCAD CBS(SET) | CCAD BILL(SET) | CCAD HANDOVER(SET) | CCAD TAG(SET) | CCAD REV(SET) | CCADACF (SET) | CCAD SSCF | RENZ % COMPLETE | July2011 Target% Complete | Claimed This Month | CCAD SUB ZONE MEP(SET) | CCAD (VO) | CCAD CSA | Act Selector % | user_number8 | user_integer1 | user_integer2 | user_number7 | Change Order # | NEW ACTIVITY ID | P_811 | P_711 | CCAD DIVISION(SET) | CCAD MEQ |
| --- | --- | --- | --- | --- | --- | --- | --- | --- | --- | --- | --- | --- | --- | --- | --- | --- | --- | --- | --- | --- | --- | --- | --- | --- | --- | --- | --- | --- | --- | --- | --- | --- | --- | --- | --- | --- | --- | --- | --- | --- | --- | --- | --- | --- | --- | --- | --- | --- |
|  | 10 | **Precommissioning Tesing & snagging (Auditorium, Ballroom , TLT, Staging KIT)** |  | 2012-12-08 | 2013-01-13 |  |  |  |  |  |  |  |  |  |  |  |  |  |  |  |  |  |  |  |  |  |  |  |  |  |  |  |  |  |  |  |  |  |  |  |  |  |  |  |  |  |  |  |
| GP2TS01801C0 |  | GA-P2 ; MEP de-snag, FIREM sign-off | 12d | 2012-12-08 | 2012-12-22 | GP2AB26015C0, GP2AB21113C0, GP2AB23019C0, GP2AB26017C0, GP2AB26003C0, GP2AB27030C0, GP2AB26019C0 |  |  |  |  | 41.5d | 0d | TESTING & COMMISSIONING [2040 h]; Cost |  |  | GP2TS01801C0 | GA | C | P2 | TS | SC | 018 | 01 | PP | BILL 6 | B06 | S1 | 01 | R00 | ACF07 | 018 |  |  |  |  |  |  |  |  |  |  |  |  |  |  |  |  |  |
| GP2TS01806C0 |  | GA-P2 ; Touch-up & Clean / JV inspection /CIR /De-snag | 18d | 2012-12-22 | 2013-01-13 | GP2AB06101C0, GP2AB08709C0, GP2AB09301C0, GP2AB09601C0, GP2AB09701C0, GP2AB09903C0, GP2AB09907C0, GP2AB11003C0, GP2AB11009C0, GP2CO04401C0, GP2TS01801C0, GP2AB05501C0, GP2AB09503C0, GP2PA09670C1, GP2AB09671C1 |  |  |  |  | 41.5d | 0d | TESTING & COMMISSIONING [128 h]; Cost |  |  | GP2TS01802C0 | GA | C | P2 | TS | SC | 018 | 02 | PP | BILL 6 | B06 | S1 | 02 | R00 | ACF07 | 018 |  |  |  |  |  |  |  |  |  |  |  |  |  |  |  |  |  |
| GP2TS01809C0 |  | GA-P2 ; Consultant's final de-snag inspection | 0d | 2013-01-13 | 2013-01-13 | GP2TS01806C0 |  |  |  |  | 41.5d | 13.5d | Cost |  |  | GP2TS01803C0 | GA | C | P2 | TS | SC | 018 | 03 | PP | BILL 6 | B06 | S1 | 03 | R00 | ACF07 | 018 |  |  |  |  |  |  |  |  |  |  |  |  |  |  |  |  |  |
|  | 04 | **Fitness, LKR & TLT** |  | 2011-04-14 | 2013-01-22 |  |  |  |  |  |  |  |  |  |  |  |  |  |  |  |  |  |  |  |  |  |  |  |  |  |  |  |  |  |  |  |  |  |  |  |  |  |  |  |  |  |  |  |
| GP2FT21111C0 |  | GA-P2 ; 1st Fix, Inst of Sprinkler main pipe (Fitness) | 78d | 2011-04-14 A | 2011-11-28 | GP2FT22005C0 SS+12d, GP2FT23001C0 SS | 40% | 46.8d | 2011-07-10 | 2011-10-11 | 34d | 0d | MECHANICAL [541.2 h]; Cost [29558 AED] | 29,557.99 | 11,823.2 | S08PA21111C0 | GA | C | P2 | FT | ME | 211 | 11 | PP | BILL 6 | B06 | S1 | 1F | R00 | ACF04 | 211 | 35 | 95 | 1715.1 | 1S | CP | MEP | M1F |  |  |  |  |  |  |  |  |  |  |
| GP2FT26001C0 |  | GA-P2 ; 1st Fix, Inst of Trunking/Conduiting (Fitness) | 78d | 2011-04-17 A | 2011-11-17 | GP2FT23001C0 SS, GP2S107807C0, GP2S207807C0 | 50% | 39d | 2011-05-10 | 2011-08-10 | 34d | 0d | ELECTRICAL [451.2 h]; Cost [24536.7 AED] | 24,536.7 | 12,268.35 | S08PA26001C0 | GA | C | P2 | FT | ME | 260 | 01 | PP | BILL 6 | B06 | S1 | 1F | R00 | ACF04 | 260 | 35 | 65 | 1475.9 | 1S | CP | MEP | M1F | 0 | 0 | 0 | 0 |  |  |  |  |  |  |
| GP2FT23001C0 |  | GA-P2 ; 1st Fix, Inst. of Supports for MEP (Fitness) | 36d | 2011-04-19 A | 2011-10-20 | GP2S107807C0, GP2S207807C0, PP1S903371C0 | 50% | 18d | 2011-09-01 | 2011-10-12 | 34d | 0d | MECHANICAL [511.2 h]; Cost [28834.6 AED] | 28,834.58 | 14,417.29 | S08PA23001C0 | GA | C | P2 | FT | ME | 230 | 01 | PP | BILL 6 | B06 | S1 | 1F | R00 | ACF04 | 230 | 35 | 95 | 1672.4 | 1S | CP | MEP | M1F | 0 | 0 | 0 | 0 |  |  |  |  |  |  |
| GP2FT09201C0 |  | GA-P2 ; Metal Studs (Fitness) | 36d | 2011-04-20 A | 2011-10-31 | GP2FT23001C0 SS, GP2PA09201C0 | 30% | 25.2d | 2011-05-10 | 2011-06-21 | 40d | 0d | PARTITIONS [3000 h]; PARTITIONS - Metal Studs [218 m]; Cost |  |  | S08PA09201C0 | GA | C | P2 | FT | PT | 092 | 01 | PP | BILL 6 | B06 | S1 | 1F | R00 | ACF06 | 092 | 20 |  |  |  | CP | GP | PMS |  |  |  |  | 313 | 944 |  |  |  |  |
| GP2FT22019C0 |  | GA-P2 ; 1st Fix, Inst of Drainage pipe (ceiling) (Fitness) | 78d | 2011-04-21 A | 2011-11-22 | GP2FT23001C0 SS, GP2FT26013C0 SS | 45% | 42.9d | 2011-06-16 | 2011-09-19 | 34d | 0d | PLUMBING [644.4 h]; Cost [35208.5 AED] | 35,208.51 | 15,843.83 | S08PA22019C0 | GA | C | P2 | FT | ME | 220 | 19 | PP | BILL 6 | B06 | S1 | 1F | R00 | ACF04 | 220 | 35 | 95 | 4083.47 | 1S | CP | MEP | M1F |  |  |  |  |  |  |  |  |  |  |
| GP2FT22005C0 |  | GA-P2 ; 1st Fix, Inst of Water supply pipe (ceiling) (Fitness) | 78d | 2011-05-15 A | 2011-11-22 | GP2FT22019C0 SS, GP2FT23001C0 SS | 45% | 42.9d | 2011-10-04 | 2012-01-10 | 34d | 0d | PLUMBING [500.4 h]; Cost [27361.7 AED] | 27,361.72 | 12,312.77 | S08PA22005C0 | GA | C | P2 | FT | ME | 220 | 05 | PP | BILL 6 | B06 | S1 | 1F | R00 | ACF04 | 220 | 35 | 45 | 1586.57 | 1S | CP | MEP | M1F | 0 | 0 | 0 | 0 |  |  |  |  |  |  |
| GP2FT22011C0 |  | GA-P2 ; 2nd Fix, Drainage/Water pipe (wall) (Fitness) | 68d | 2011-05-15 A | 2011-12-20 | GP2FT09201C0 | 45% | 37.4d | 2011-09-22 | 2011-12-17 | 47.6d | 0d | PLUMBING [644.4 h]; Cost [35208.5 AED] | 35,208.51 | 15,843.83 | S08PA22011C0 | GA | C | P2 | FT | ME | 220 | 11 | PP | BILL 6 | B06 | S1 | 2F | R00 | ACF07 | 220 | 35 | 45 | 4083.51 | 2n | CP | MEP |  |  |  |  |  |  |  |  |  |  |  |
| GP2FT23017C0 |  | GA-P2 ; 1st Fix, Inst of CHW pipe (Fitness) | 60d | 2011-05-15 A | 2011-12-04 | GP2FT21111C0 SS+6d, GP2FT23001C0 SS | 15% | 51d | 2011-10-18 | 2012-01-03 | 34d | 0d | MECHANICAL [1650 h]; Cost [90112.2 AED] | 90,112.24 | 13,516.84 | S08PA23017C0 | GA | C | P2 | FT | ME | 230 | 17 | PP | BILL 6 | B06 | S1 | 1F | R00 | ACF04 | 230 | 10 | 50 | 5226.31 | 1S | CP | MEP | M1F |  |  |  |  |  |  |  |  |  |  |
| GP2FT23023C0 |  | GA-P2 ; 1st Fix, Inst of Main Ducting (Fitness) | 78d | 2011-05-15 A | 2011-11-28 | GP2FT23001C0 SS, GP2FT23017C0 SS+10d | 40% | 46.8d | 2011-10-30 | 2012-02-06 | 83.2d | 0d | MECHANICAL [7458 h]; Cost [407301 AED] | 407,300.87 | 162,920.35 | S08PA23023C0 | GA | C | P2 | FT | ME | 230 | 23 | PP | BILL 6 | B06 | S1 | 1F | R00 | ACF04 | 230 | 10 | 45 |  | 1S | CP | MEP | M1F |  |  |  |  |  |  |  |  |  |  |
| GP2FT26013C0 |  | GA-P2 ; 1st Fix, Inst of Cable Tray (Fitness) | 78d | 2011-05-15 A | 2011-11-17 | GP2FT23001C0 SS, GP2FT27010C0 SS, GP2S107807C0, GP2S207807C0 | 50% | 39d | 2011-09-22 | 2011-12-28 | 34d | 0d | ELECTRICAL [244.8 h]; Cost [13923.6 AED] | 13,923.6 | 6,961.8 | S08PA26013C0 | GA | C | P2 | FT | ME | 260 | 13 | PP | BILL 6 | B06 | S1 | 1F | R00 | ACF04 | 260 | 10 | 45 | 5590.49 | 1S | CP | MEP | M1F | 0 | 0 | 0 | 0 |  |  |  |  |  |  |
| GP2FT27010C0 |  | GA-P2 ; 1st Fix, Inst of Trunking for ELV system (Fitness) | 72d | 2011-05-15 A | 2011-12-04 | GP2FT23001C0 SS, GP2FT26001C0 SS, GP2S107807C0, GP2S207807C0 | 30% | 50.4d | 2011-09-22 | 2011-12-21 | 34d | 0d | ELECTRICAL [597.6 h]; Cost [31671.7 AED] | 31,671.72 | 9,501.52 | S08PA27010C0 | GA | C | P2 | FT | ME | 270 | 10 | PP | BILL 6 | B06 | S1 | 1F | R00 | ACF04 | 270 | 35 | 65 | 11329.17 | 1S | CP | MEP | M1F |  |  |  |  |  |  | 30 | 10 |  |  |
| GP2FT27001C0 |  | GA-P2 ; 1st Fix, Wiring/ Cabling work (Fitness) | 66d | 2011-06-08 A | 2012-01-31 | GP2FT26001C0, GP2FT26013C0, GP2FT27010C0 | 25% | 49.5d | 2011-10-10 | 2012-01-02 | 84.1d | 50.1d | ELECTRICAL [242.4 h]; Cost [12852.6 AED] | 12,852.56 | 3,213.14 | S08PA27001C0 | GA | C | P2 | FT | ME | 270 | 01 | PP | BILL 6 | B06 | S1 | 1F | R00 | ACF04 | 270 |  | 25 | 3977.23 | 1S | CP | MEP | M1F |  |  |  |  |  |  |  |  |  |  |
| GP2FT21117C0 |  | GA-P2 ; 1st Fix, Inst of Sprinkler branch pipe (Fitness) | 72d | 2011-07-10 A | 2012-01-24 | GP2FT09201C0, GP2FT21111C0 | 35% | 46.8d | 2011-10-11 | 2012-01-10 | 90.4d | 56.4d | MECHANICAL [931.2 h]; Cost [50874.3 AED] | 50,874.31 | 17,806.01 | S08PA21117C0 | GA | C | P2 | FT | ME | 211 | 17 | PP | BILL 6 | B06 | S1 | 1F | R00 | ACF04 | 211 |  | 96 |  | 1S | CP | MEP | M1F | 0 | 0 | 0 | 0 |  |  |  |  |  |  |
| GP2FT23015C0 |  | GA-P2 ; 2nd Fix, Insulation of CHW pipe & Duct (Fitness) | 60d | 2011-07-10 A | 2012-03-31 | GP2FT23009C0, GP2FT23017C0 SS, GP2FT23023C0 | 15% | 51d | 2011-11-10 | 2012-01-23 | 34d | 0d | MECHANICAL [1699.2 h]; Cost [92761.9 AED] | 92,761.87 | 13,914.28 | S08PA23015C0 | GA | C | P2 | FT | ME | 230 | 15 | PP | BILL 6 | B06 | S1 | 2F | R00 | ACF07 | 230 |  | 45 |  | 2n | CP | MEP |  |  |  |  |  |  |  |  |  |  |  |
| GP2FT26009C0 |  | GA-P2 ; 2nd Fix, Inst of Wall conduites (Fitness) | 60d | 2011-08-10 A | 2011-12-18 | GP2FT09201C0 | 40% | 36d | 2011-09-21 | 2011-12-06 | 49d | 1.4d | ELECTRICAL [451.2 h]; Cost [24536.7 AED] | 24,536.7 | 9,814.68 | S08PA26009C0 | GA | C | P2 | FT | ME | 260 | 09 | PP | BILL 6 | B06 | S1 | 2F | R00 | ACF07 | 260 |  | 25 |  | 2n | CP | MEP |  | 0 | 0 | 0 | 0 |  |  | 25 | 0 |  |  |
| GP2FT09203C0 |  | GA-P2 ; Partitions 1st face (Fitness) | 45d | 2011-11-01 | 2011-12-28 | GP2FT09201C0 |  |  |  |  | 40d | 6d | PARTITIONS [218 m]; PARTITIONS [2353 h]; Cost |  |  | S08PA09203C0 | GA | C | P2 | FT | PT | 092 | 03 | PP | BILL 6 | B06 | S1 | 2F | R00 | ACF06 | 092 |  |  |  |  |  | GP | P1F |  |  |  |  | 314 | 945 |  |  |  |  |
| GP2FT23008C0 |  | GA-P2 ; 1st Fix, Inst of VCD's/FD's (Fitness) | 54d | 2011-11-28 | 2012-02-01 | GP2FT23023C0 |  |  |  |  | 83.2d | 49.2d | MECHANICAL [673.2 h]; Cost |  |  | S08PA23008C0 | GA | C | P2 | FT | ME | 230 | 08 | PP | BILL 6 | B06 | S1 | 1F | R00 | ACF04 | 230 |  | 45 |  | 1S |  | MEP | M1F |  |  |  |  |  |  |  |  |  |  |
| GP2FT23009C0 |  | GA-P2 ; 2nd Fix, Inst of VAV'S CHW connection (Fitness) | 48d | 2011-12-05 | 2012-01-30 | GP2FT23017C0 |  |  |  |  | 34d | 0d | MECHANICAL [788.4 h]; Cost |  |  | S08PA23009C0 | GA | C | P2 | FT | ME | 230 | 09 | PP | BILL 6 | B06 | S1 | 2F | R00 | ACF07 | 230 |  | 45 |  | 2n |  | MEP |  |  |  |  |  |  |  |  |  |  |  |
| GP2FT01005C0 |  | GA-P2 ; 2nd, Wall Inspection by Consultant (Fitness) | 0d | 2011-12-20 | 2011-12-20 | GP2FT22011C0, GP2FT26009C0 |  |  |  |  | 47.6d | 13.6d | Cost |  |  | S08PA01005C0 | GA | C | P2 | FT | ME | 010 | 05 | PP | BILL 6 | B06 | S1 | WI | R00 | ACF07 | 010 |  |  |  | 2n |  | MEP |  |  |  |  |  |  |  |  |  |  |  |
| GP2FT08103C0 |  | GA-P2 ; Door Frames (Fitness) | 36d | 2012-01-02 | 2012-02-13 | GP2FT09201C0 SS+14d, GNHE08101C0 FS+130d |  |  |  |  | 50d | 16d | ASSORTED DOORS [193 h]; Cost |  |  | S08PA08103C0 | GA | C | P2 | FT | DO | 081 | 03 | PP | BILL 6 | B06 | S1 | DF | R00 | ACF06 | 081 |  |  |  |  |  |  |  |  |  |  |  | 316 | 947 |  |  | 08 |  |
| GP2FT09205C0 |  | GA-P2 ; Partitions Closing (Fitness) | 48d | 2012-01-07 | 2012-03-03 | GAFOA09208C1 FF, GP2CO04407C0 FF, GP2FT01005C0, GP2FT09203C0, GP2FT22005C0, GP2FT22019C0, GP2FT08103C0 FF |  |  |  |  | 34d | 0d | PARTITIONS [218 m]; PARTITIONS [3020 h]; Cost |  |  | S08PA09205C0 | GA | C | P2 | FT | PT | 092 | 05 | PP | BILL 6 | B06 | S1 | FF | R00 | ACF06 | 092 |  |  |  |  |  | GP | P2F |  |  |  |  | 315 | 946 |  |  |  |  |
| GP2FT07101C0 |  | GA-P2 ; Waterproofing (Fitness) | 18d | 2012-03-04 | 2012-03-24 | GP2FT09205C0 |  |  |  |  | 70d | 36d | THERMAL & MOISTURE [232 h]; THERMAL & MOISTURE [1501 m2]; Cost |  |  | S08PA09201C0 | GA | C | P2 | FT | FF | 071 | 01 | PP | BILL 6 | B06 | S1 | 01 | R00 | ACF03 | 071 |  |  |  |  |  |  |  |  |  |  |  | 313 | 944 |  |  |  |  |
| GP2FT09901C0 |  | GA-P2 ; Wall Prime & 1st coat (Fitness) | 24d | 2012-03-04 | 2012-03-31 | GP2FT09205C0 |  |  |  |  | 34d | 0d | WALL PAINT [201 h]; WALL PAINT [249 m2]; Cost |  |  | S08PA09901C0 | GA | C | P2 | FT | PA | 099 | 01 | PP | BILL 6 | B06 | S1 | 01 | R00 | ACF06 | 099 |  |  |  |  |  |  |  |  |  |  |  | 328 | 956 |  |  |  |  |
| GP2FT23011C0 |  | GA-P2 ; 2nd Fix, Inst of Equipment (FCU,FAN) (Fitness) | 48d | 2012-03-04 | 2012-04-28 | GP2FT09205C0 |  |  |  |  | 123.5d | 84d | MECHANICAL [406.8 h]; Cost |  |  | S08PA23011C0 | GA | C | P2 | FT | ME | 230 | 11 | PP | BILL 6 | B06 | S1 | 2F | R00 | ACF04 | 230 |  |  |  | 2n |  | MEP |  |  |  |  |  |  |  |  |  |  | H |
| GP2FT26005C0 |  | GA-P2 ; 2nd Fix, Wiring for Power/Lighting/Emergency (Fitness) | 48d | 2012-03-04 | 2012-04-28 | GP2FT09205C0 |  |  |  |  | 93.5d | 0d | ELECTRICAL [242.4 h]; Cost |  |  | S08PA26005C0 | GA | C | P2 | FT | ME | 260 | 05 | PP | BILL 6 | B06 | S1 | 2F | R00 | ACF07 | 260 |  |  |  | 2n |  | MEP |  |  |  |  |  |  |  |  |  |  |  |
| GP2FT26007C0 |  | GA-P2 ; 2nd Fix, Cable Pulling (Fitness) | 48d | 2012-03-04 | 2012-04-28 | GP2FT09201C0 SS+6d, GP2FT09205C0 |  |  |  |  | 166d | 132d | ELECTRICAL [1117.2 h]; Cost |  |  | S08PA26007C0 | GA | C | P2 | FT | ME | 260 | 07 | PP | BILL 6 | B06 | S1 | 2F | R00 | ACF07 | 260 |  | 25 |  | 2n |  | MEP |  |  |  |  |  |  |  |  |  |  |  |
| GP2FT26011C0 |  | GA-P2 ; 2nd Fix, Inst of Equipment (DB) (Fitness) | 60d | 2012-03-04 | 2012-05-12 | GP2FT09205C0 |  |  |  |  | 94d | 60d | ELECTRICAL [524.4 h]; Cost |  |  | S08PA26011C0 | GA | C | P2 | FT | ME | 260 | 11 | PP | BILL 6 | B06 | S1 | 2F | R00 | ACF04 | 260 |  |  |  | 2n |  | MEP |  |  |  |  |  |  |  |  |  |  | E |
| GP2FT26053C0 |  | GA-P2 ; 2nd Fix, Wiring / Cabling (Fitness) | 48d | 2012-03-04 | 2012-04-28 | GP2FT09205C0 |  |  |  |  | 166d | 132d | ELECTRICAL [242.4 h]; Cost |  |  | S08PA26053C0 | GA | C | P2 | FT | ME | 260 | 53 | PP | BILL 6 | B06 | S1 | 2F | R00 | ACF07 | 260 |  |  |  | 2n |  | MEP |  |  |  |  |  | 389 | 977 |  |  |  |  |
| GP2FT05501C0 |  | GA-P2 ; Handrails & balustrade (Fitness) | 36d | 2012-04-01 | 2012-05-12 | GP2FT09901C0 |  |  |  |  | 94d | 60d | SECONDARY STEEL [1588 h]; Cost |  |  | S08PA05501C0 | GA | C | P2 | FT | SW | 055 | 01 | PP | BILL 6 | B06 | S1 | 01 | R00 | ACF03 | a |  |  |  |  |  |  |  |  |  |  |  |  |  |  |  |  |  |
| GP2FT09501C0 |  | GA-P2 ; Ceiling Grid and Service Tile (Fitness) | 30d | 2012-04-01 | 2012-05-05 | GP2FT09205C0 SS+15d, GP2FT21117C0, GP2FT23008C0, GP2FT23009C0, GP2FT23015C0, GP2FT27001C0, GP2FT09901C0 |  |  |  |  | 34d | 0d | CEILING GRID FOR GYPSUM [1227.24 h]; CEILING GRID FOR GYPSUM [104.95 m2]; Cost |  |  | S08PA09501C0 | GA | C | P2 | FT | CE | 095 | 01 | PP | BILL 6 | B06 | S1 | 01 | R00 | ACF06 | 095 |  |  |  |  |  |  |  |  |  |  |  | 323 | 952 |  |  |  |  |
| GP2FT26015C0 |  | GA-P2 ; Final Fix, Termination & Gladding of Cables (Fitness) | 30d | 2012-04-29 | 2012-06-02 | GP2FT26005C0 |  |  |  |  | 93.5d | 54d | ELECTRICAL [62.4 h]; Cost |  |  | S08PA26015C0 | GA | C | P2 | FT | ME | 260 | 15 | PP | BILL 6 | B06 | S1 | FF | R00 | ACF07 | 260 |  |  |  | FF |  | MEP |  |  |  |  |  |  |  |  |  |  |  |
| GP2FT09601C0 |  | GA-P2 ; Flooring (Rubber & etc) (Fitness) | 66d | 2012-05-06 | 2012-07-22 | GP2FT07101C0, GP2FT09501C0, GP2FT05501C0 FF |  |  |  |  | 34d | 0d | RUBBER FLOOR [80 h]; RUBBER FLOOR [193 m2]; Cost |  |  | S08PA09601C0 | GA | C | P2 | FT | FF | 096 | 01 | PP | BILL 6 | B06 | S1 | 03 | R00 | ACF06 | RF |  |  |  |  |  |  |  |  |  |  |  | 326 | 955 |  |  |  |  |
| GP2FT21115C0 |  | GA-P2 ; 2nd Fix, Inst of Sprinkler droppers (Fitness) | 48d | 2012-05-06 | 2012-07-01 | GP2FT09501C0 |  |  |  |  | 39.5d | 0d | MECHANICAL [1734 h]; Cost |  |  | S08PA21115C0 | GA | C | P2 | FT | ME | 211 | 15 | PP | BILL 6 | B06 | S1 | 2F | R00 | ACF07 | 211 |  |  |  | 2n |  | MEP |  |  |  |  |  |  |  |  |  |  |  |
| GP2FT23021C0 |  | GA-P2 ; 2nd Fix, Inst of Flexible Duct & Plenum boxes (Fitness) | 54d | 2012-05-06 | 2012-07-08 | GP2FT09205C0, GP2FT09501C0 |  |  |  |  | 75.5d | 0d | MECHANICAL [1962 h]; Cost |  |  | S08PA23021C0 | GA | C | P2 | FT | ME | 230 | 21 | PP | BILL 6 | B06 | S1 | 2F | R00 | ACF07 | 230 |  |  |  | 2n |  | MEP |  |  |  |  |  |  |  |  |  |  |  |
| GP2FT26017C0 |  | GA-P2 ; Final Fix, Inst of Ceiling rose (Fitness) | 30d | 2012-05-06 | 2012-06-09 | GP2FT09501C0 |  |  |  |  | 39.5d | 0d | ELECTRICAL [34.8 h]; Cost |  |  | S08PA26017C0 | GA | C | P2 | FT | ME | 260 | 17 | PP | BILL 6 | B06 | S1 | FF | R00 | ACF07 | 260 |  |  |  | FF |  | MEP |  |  |  |  |  |  |  |  |  |  |  |
| GP2FT27002C0 |  | GA-P2 ; 2nd Fix, Wiring Droppers (Fitness) | 48d | 2012-05-06 | 2012-07-01 | GP2FT09501C0 |  |  |  |  | 39.5d | 0d | ELECTRICAL [242.4 h]; Cost |  |  | S08PA27002C0 | GA | C | P2 | FT | ME | 270 | 02 | PP | BILL 6 | B06 | S1 | 2F | R00 | ACF07 | 270 |  |  |  | 2n |  | MEP |  |  |  |  |  |  |  |  |  |  |  |
| GP2FT27020C0 |  | GA-P2 ; 2nd Fix, Inst of ELV Equipment (Panels) (Fitness) | 60d | 2012-05-06 | 2012-07-15 | GP2FT09205C0, GP2FT09501C0 |  |  |  |  | 40d | 6d | ELECTRICAL [1618.8 h]; Cost |  |  | S08PA27020C0 | GA | C | P2 | FT | ME | 270 | 20 | PP | BILL 6 | B06 | S1 | 2F | R00 | ACF04 | 270 |  |  |  | 2n |  | MEP |  |  |  |  |  |  |  |  |  |  | E |
| GP2FT23019C0 |  | GA-P2 ; Final Fix, Inst of Grilles & Diffusers (Fitness) | 36d | 2012-05-13 | 2012-06-24 | GP2FT09501C0, GP2FT23021C0 SS+6d |  |  |  |  | 75.5d | 36d | MECHANICAL [1030.8 h]; Cost |  |  | S08PA23019C0 | GA | C | P2 | FT | ME | 230 | 19 | PP | BILL 6 | B06 | S1 | FF | R00 | ACF07 | 230 |  |  |  | FF |  | MEP |  |  |  |  |  |  |  |  |  |  |  |
| GP2FT26003C0 |  | GA-P2 ; Final Fix, Inst of Light fittings (Fitness) | 48d | 2012-06-10 | 2012-08-05 | GP2FT09501C0, GP2FT26017C0 |  |  |  |  | 39.5d | 0d | ELECTRICAL [7791.6 h]; Cost |  |  | S08PA26003C0 | GA | C | P2 | FT | ME | 260 | 03 | PP | BILL 6 | B06 | S1 | FF | R00 | ACF07 | 260 |  |  |  | FF |  | MEP |  |  |  |  |  |  |  |  |  |  |  |
| GP2FT21113C0 |  | GA-P2 ; Final Fix, Inst of Sprinklers head/ Extinguisher (Fitness) | 30d | 2012-07-02 | 2012-08-05 | GP2FT09501C0, GP2FT21115C0 |  |  |  |  | 39.5d | 0d | MECHANICAL [297.6 h]; Cost |  |  | S08PA21113C0 | GA | C | P2 | FT | ME | 211 | 13 | PP | BILL 6 | B06 | S1 | FF | R00 | ACF07 | 211 |  |  |  | FF |  | MEP |  |  |  |  |  |  |  |  |  |  |  |
| GP2FT27030C0 |  | GA-P2 ; Final Fix, Inst of ELV devise (Detector/Speaker) (Fitness) | 30d | 2012-07-02 | 2012-08-05 | GP2FT09501C0, GP2FT27002C0 |  |  |  |  | 39.5d | 0d | ELECTRICAL [710.4 h]; Cost |  |  | S08PA27030C0 | GA | C | P2 | FT | ME | 270 | 30 | PP | BILL 6 | B06 | S1 | FF | R00 | ACF07 | 270 |  |  |  | FF |  | MEP |  |  |  |  |  |  |  |  |  |  |  |
| GP2FT08107C0 |  | GA-P2 ; Doors (Fitness) | 36d | 2012-07-23 | 2012-09-04 | GP2FT08103C0, GP2FT09901C0, GP2FT09601C0 |  |  |  |  | 110d | 0d | ASSORTED DOORS [280 h]; ASSORTED DOORS [28 no]; Cost |  |  | S08PA08107C0 | GA | C | P2 | FT | DO | 081 | 07 | PP | BILL 6 | B06 | S1 | DR | R00 | ACF06 | 081 |  |  |  |  |  |  |  |  |  |  |  | 317 | 948 |  |  | 08 |  |
| GP2FT09701C0 |  | GA-P2 ; Wall finishes (ST, WD, WC) (Fitness) | 60d | 2012-07-23 | 2012-10-02 | GP2FT26011C0, GP2FT27020C0, GP2FT09601C0 |  |  |  |  | 34d | 0d | ASSORTED WALL FINISH [667 h]; ASSORTED WALL FINISH [765 m2]; Cost |  |  | S08PA09701C0 | GA | C | P2 | FT | WF | 097 | 01 | PP | BILL 6 | B06 | S1 | 01 | R00 | ACF06 | 097 |  |  |  |  |  |  |  |  |  |  |  | 105 | 1002 |  |  |  |  |
| GP2FT11002C0 |  | GA-P2 ; Kitchen Equipment installation (Fitness) | 18d | 2012-07-23 | 2012-08-12 | GP2FT09601C0 |  |  |  |  | 130d | 90d | FF&E [162 h]; FF&E [54.14 no]; Cost |  |  | S08PA09201C0 | GA | C | P2 | FT | EQ | 110 | 02 | PP | BILL 6 | B06 | S1 | 06 | R00 | ACF08 | KE |  |  |  |  |  | GP |  |  |  |  |  | 313 | 944 |  |  |  |  |
| GP2FT11003C0 |  | GA-P2 ; Locker & Recep Desk installation (Fitness) | 30d | 2012-07-23 | 2012-08-28 | GP2FT09601C0 |  |  |  |  | 118d | 78d | FF&E [30 h]; FF&E [15.91 no]; Cost |  |  | S08PA09201C0 | GA | C | P2 | FT | WO | 110 | 03 | PP | BILL 6 | B06 | S1 | 10 | R00 | ACF08 | f |  |  |  |  |  |  |  |  |  |  |  | 313 | 944 |  |  |  |  |
| GP2FT01006C0 |  | GA-P2 ; 2nd, Ceiling Inspection by Consultants (Fitness) | 0d | 2012-08-06 | 2012-08-06 | GP2FT21115C0, GP2FT23009C0, GP2FT23011C0, GP2FT23015C0, GP2FT27002C0, GP2FT09501C0, GP2FT21113C0, GP2FT23019C0, GP2FT26003C0, GP2FT26017C0, GP2FT27030C0, GP2FT26015C0 |  |  |  |  | 39.5d | 0d | Cost |  |  | S08PA01006C0 | GA | C | P2 | FT | ME | 010 | 06 | PP | BILL 6 | B06 | S1 | CI | R00 | ACF07 | 010 |  |  |  | 2n |  | MEP |  |  |  |  |  |  |  |  |  |  |  |
| GP2FT06101C0 |  | GA-P2 ; Wood / caseworks (Fitness) | 42.5d | 2012-08-06 | 2012-09-26 | GP2CO04404C0, GP2FT01006C0, GP2FT09501C0, GP2FT09901C0, GP2CO04404C10, CAFWA00113M0 FS+12d, GP2FT09601C0 |  |  |  |  | 39.5d | 5.5d | Labor General [1 h]; Cost |  |  | DP2KS06101C0 | GA | C | P2 | FT | WO | 061 | 01 | PP | BILL 6 | B06 | S1 | WW | R00 | ACF06 | 061 |  |  |  |  |  |  |  |  |  |  |  | 332 | 960 |  |  |  |  |
| GP2FT08709C0 |  | GA-P2 ; Ironmongery (Fitness) | 20d | 2012-09-05 | 2012-09-27 | GP2FT08107C0 |  |  |  |  | 110d | 76d | IRONMONGERY [200 h]; IRONMONGERY [20 no]; Cost |  |  | S08PA08709C0 | GA | C | P2 | FT | DO | 087 | 09 | PP | BILL 6 | B06 | S1 | IM | R00 | ACF06 | 087 |  |  |  |  |  |  |  |  |  |  |  | 322 | 951 |  |  | 08 |  |
| GP2FT09503C0 |  | GA-P2 ; Ceiling closure - ACT/Gypsum (Fitness) | 24d | 2012-10-03 | 2012-11-01 | GAFOA09507C1, GP2FT01006C0, GP2FT21115C0, GP2FT26005C0, GP2FT27001C0, GP2FT27002C0, GP2FT06101C0, GP2FT09701C0, GP2FT23021C0, GP2FT26053C0, GP2FT26007C0 |  |  |  |  | 34d | 0d | ASSORTED CEILING FINISH [693.72 h]; CEILING GYPSUM [34.44 h]; ASSORTED CEILING FINISH [1128 m2]; CEILING GYPSUM [105 m2]; Cost |  |  | S08PA09503C0 | GA | C | P2 | FT | CE | 095 | 03 | PP | BILL 6 | B06 | S1 | 02 | R00 | ACF06 | 095 |  |  |  |  |  |  |  |  |  |  |  | 324 | 953 |  |  |  |  |
| GP2FT11009C0 |  | GA-P2 ; Signage (Fitness) | 12.5d | 2012-10-03 | 2012-10-17 | GP2FT09701C0 |  |  |  |  | 93.5d | 59.5d | SIGNAGES [39 h]; SIGNAGES [39.41 no]; Cost |  |  | S08PA11009C0 | GA | C | P2 | FT | SA | 110 | 09 | PP | BILL 6 | B06 | S1 | 09 | R00 | ACF08 | c |  |  |  |  |  |  |  |  |  |  |  | 322 | 951 |  |  | 08 |  |
| GP2FT09905C0 |  | GA-P2 ; Ceiling Prime & 1st coat (Fitness) | 24d | 2012-11-03 | 2012-12-01 | GP2FT09503C0, GP2FT09501C0 |  |  |  |  | 34d | 0d | CEILING PAINT [186 h]; CEILING PAINT [232 m2]; Cost |  |  | S08PA09905C0 | GA | C | P2 | FT | PA | 099 | 05 | PP | BILL 6 | B06 | S1 | 01 | R00 | ACF06 | 099 |  |  |  |  |  |  |  |  |  |  |  | 330 | 958 |  |  |  |  |
| GP2FT26019C0 |  | GA-P2 ; Final Fix, Inst of Switch/Sockets (Fitness) | 18d | 2012-11-03 | 2012-11-24 | GP2FT09901C0, GP2FT09503C0 |  |  |  |  | 53.5d | 0d | ELECTRICAL [132 h]; Cost |  |  | S08PA26019C0 | GA | C | P2 | FT | ME | 260 | 19 | PP | BILL 6 | B06 | S1 | FF | R00 | ACF07 | 260 |  |  |  | FF |  | MEP |  |  |  |  |  |  |  |  |  |  |  |
| GP2FT09903C0 |  | GA-P2 ; Wall Final Paint (Fitness) | 24d | 2012-12-02 | 2012-12-30 | GP2FT09901C0, GP2FT09905C0 |  |  |  |  | 34d | 0d | WALL PAINT [108 h]; WALL PAINT [134 m2]; Cost |  |  | S08PA09903C0 | GA | C | P2 | FT | PA | 099 | 03 | PP | BILL 6 | B06 | S1 | 02 | R00 | ACF06 | 099 |  |  |  |  |  |  |  |  |  |  |  | 329 | 957 |  |  |  |  |
| GP2FT09907C0 |  | GA-P2 ; Ceiling Final paint (Fitness) | 18d | 2012-12-02 | 2012-12-23 | GP2FT09601C0, GP2FT09905C0, GP2FT11003C0, GP2FT11002C0 |  |  |  |  | 40d | 6d | CEILING PAINT [101 h]; CEILING PAINT [125 m2]; Cost |  |  | S08PA09907C0 | GA | C | P2 | FT | PA | 099 | 07 | PP | BILL 6 | B06 | S1 | 02 | R00 | ACF06 | 099 |  |  |  |  |  |  |  |  |  |  |  | 331 | 959 |  |  |  |  |

| ID | WBS | Activity | Duration | Start | Finish | Predecessors | Complete | Remaining | Planned start | Planned finish | Total float | Free float | Resources | Cost | Actual cost | change id | CCAD BUILDING(SET) | CCAD PHASE(SET) | CCAD FLOOR(SET) | CCAD ZONE(SET) | CCAD WORK(SET) | CCAD SECTION(SET) | CCAD SERIAL No.(SET) | CCAD RESPONSIBILITY(SET) | CCAD CBS(SET) | CCAD BILL(SET) | CCAD HANDOVER(SET) | CCAD TAG(SET) | CCAD REV(SET) | CCADACF (SET) | CCAD SSCF | RENZ % COMPLETE | July2011 Target% Complete | P_811 | P_711 | CCAD SUB ZONE MEP(SET) | CCAD (VO) | CCAD CSA | Act Selector % | user_number8 | user_integer1 | user_integer2 | user_number7 | Change Order # | NEW ACTIVITY ID | Claimed This Month | CCAD DIVISION(SET) | CCAD MEQ | R3 Finish |
| --- | --- | --- | --- | --- | --- | --- | --- | --- | --- | --- | --- | --- | --- | --- | --- | --- | --- | --- | --- | --- | --- | --- | --- | --- | --- | --- | --- | --- | --- | --- | --- | --- | --- | --- | --- | --- | --- | --- | --- | --- | --- | --- | --- | --- | --- | --- | --- | --- | --- |
|  | 10 | **Precommissioning Tesing & snagging (Fitness, LKR & TLT)** |  | 2012-11-25 | 2013-01-22 |  |  |  |  |  |  |  |  |  |  |  |  |  |  |  |  |  |  |  |  |  |  |  |  |  |  |  |  |  |  |  |  |  |  |  |  |  |  |  |  |  |  |  |  |
| GP2TS01804C0 |  | GA-P2 ; MEP de-snag, FIREM sign-off | 10.5d | 2012-11-25 | 2012-12-08 | GP2FT26015C0, GP2FT21113C0, GP2FT23019C0, GP2FT26017C0, GP2FT26003C0, GP2FT27030C0, GP2FT26019C0, GP2FT09503C0 |  |  |  |  | 53.5d | 19.5d | TESTING & COMMISSIONING [510 h]; Cost |  |  | GP2TS01801C0 | GA | C | P2 | TS | SC | 018 | 01 | PP | BILL 6 | B06 | S1 | 01 | R00 | ACF07 | 018 |  |  |  |  |  |  |  |  |  |  |  |  |  |  |  |  |  |  |
| GP2TS01807C0 |  | GA-P2 ; Touch-up & Clean / JV inspection /CIR /De-snag | 18d | 2012-12-31 | 2013-01-21 | GP2CO04401C0, GP2FT06101C0, GP2FT08709C0, GP2FT09205C0, GP2FT09601C0, GP2FT09701C0, GP2FT09903C0, GP2FT09907C0, GP2FT11002C0, GP2FT11003C0, GP2FT11009C0, GP2TS01804C0, GP2FT05501C0 |  |  |  |  | 34d | 0d | TESTING & COMMISSIONING [128 h]; Cost |  |  | GP2TS01802C0 | GA | C | P2 | TS | SC | 018 | 02 | PP | BILL 6 | B06 | S1 | 02 | R00 | ACF07 | 018 |  |  |  |  |  |  |  |  |  |  |  |  |  |  |  |  |  |  |
| GP2TS01810C0 |  | GA-P2 ; Consultant's final de-snag inspection | 0d | 2013-01-22 | 2013-01-22 | GP2TS01807C0 |  |  |  |  | 34d | 6d | Cost |  |  | GP2TS01803C0 | GA | C | P2 | TS | SC | 018 | 03 | PP | BILL 6 | B06 | S1 | 03 | R00 | ACF07 | 018 |  |  |  |  |  |  |  |  |  |  |  |  |  |  |  |  |  |  |
|  | 05 | **Public Area ( Elev.Lobby & Corridors )** |  | 2011-03-07 | 2013-01-17 |  |  |  |  |  |  |  |  |  |  |  |  |  |  |  |  |  |  |  |  |  |  |  |  |  |  |  |  |  |  |  |  |  |  |  |  |  |  |  |  |  |  |  |  |
| GP2PA23001C0 |  | GA-P2 ; 1st Fix, Inst. of Supports for MEP (Public Area) | 200d | 2011-03-07 A | 2011-10-11 | GP2S107807C0, GP2S207807C0 | 95% | 10d | 2011-04-12 | 2011-12-11 | 40d | 0d | MECHANICAL [2642.4 h]; Cost [28834.6 AED] | 28,834.58 | 27,392.85 | S08PA23001C0 | GA | C | P2 | PA | ME | 230 | 01 | PP | BILL 6 | B06 | S1 | 1F | R00 | ACF04 | 230 | 95 | 100 | 95 | 90 | 1S | CP | MEP | M1F |  |  |  |  |  |  |  |  |  |  |
| GP2PA09201C0 |  | GA-P2 ; Metal Studs (Public Area) | 12d | 2011-04-05 A | 2011-10-02 | GP2PA23001C0 SS+12d | 85% | 1.8d | 2011-04-26 | 2011-05-10 | 40d | 0d | PARTITIONS [1212 h]; PARTITIONS - Metal Studs [88 m]; Cost |  |  | S08PA09201C0 | GA | C | P2 | PA | PT | 092 | 01 | PP | BILL 6 | B06 | S1 | 1F | R00 | ACF06 | 092 | 20 |  |  |  |  | CP | GP | PMS | 0 | 0 | 0 | 0 | 313 | 944 | 20743.2 |  |  |  |
| GP2PA22019C0 |  | GA-P2 ; 1st Fix, Inst of Drainage pipe (ceiling) (Public Area) | 132d | 2011-04-19 A | 2011-11-22 | GP2PA23001C0, GP2PA26013C0 SS+14d | 75% | 33d | 2011-06-21 | 2011-11-29 | 85.49d | 0d | PLUMBING [823.2 h]; Cost [35208.5 AED] | 35,208.51 | 26,406.39 | S08PA22019C0 | GA | C | P2 | PA | ME | 220 | 19 | PP | BILL 6 | B06 | S1 | 1F | R00 | ACF04 | 220 | 55 | 90 |  |  | 1S | CP | MEP | M1F | 0 | 0 | 0 | 0 |  |  | 7876.65 |  |  |  |
| GP2PA21111C0 |  | GA-P2 ; 1st Fix, Inst of Sprinkler main pipe (Public Area) | 200d | 2011-04-20 A | 2011-10-23 | GP2PA22005C0 SS+12d, GP2PA23001C0 | 95% | 10d | 2011-07-14 | 2012-03-14 | 123.5d | 0d | MECHANICAL [876 h]; Cost [29558 AED] | 29,557.99 | 28,080.09 | S08PA21111C0 | GA | C | P2 | PA | ME | 211 | 11 | PP | BILL 6 | B06 | S1 | 1F | R00 | ACF04 | 211 | 95 | 98 |  |  | 1S | CP | MEP | M1F |  |  |  |  |  |  |  |  |  |  |
| GP2PA21117C0 |  | GA-P2 ; 1st Fix, Inst of Sprinkler branch pipe (Public Area) | 200d | 2011-04-27 A | 2011-11-03 | GP2PA09201C0, GP2PA21111C0 | 95% | 10d | 2011-08-29 | 2012-04-29 | 203.5d | 150.07d | MECHANICAL [931.2 h]; Cost [50874.3 AED] | 50,874.31 | 48,330.6 | S08PA21117C0 | GA | C | P2 | PA | ME | 211 | 17 | PP | BILL 6 | B06 | S1 | 1F | R00 | ACF04 | 211 | 55 | 96 | 90 | 70 | 1S | CP | MEP | M1F | 0 | 0 | 0 | 0 |  |  | 2948.9 |  |  |  |
| GP2PA22005C0 |  | GA-P2 ; 1st Fix, Inst of Water supply pipe (ceiling) (Public Area) | 78d | 2011-05-15 A | 2011-12-11 | GP2PA22019C0 SS+7d, GP2PA23001C0 | 40% | 46.8d | 2011-07-04 | 2011-10-05 | 85.49d | 0d | PLUMBING [500.4 h]; Cost [27361.7 AED] | 27,361.72 | 10,944.69 | S08PA22005C0 | GA | C | P2 | PA | ME | 220 | 05 | PP | BILL 6 | B06 | S1 | 1F | R00 | ACF04 | 220 | 30 | 60 |  |  | 1S | CP | MEP | M1F | 0 | 0 | 0 | 0 |  |  | 3173.14 |  |  |  |
| GP2PA23023C0 |  | GA-P2 ; 1st Fix, Inst of Main Ducting (Public Area) | 120d | 2011-05-15 A | 2011-11-27 | GP2PA23001C0, GP2PA23017C0 SS+7d | 70% | 36d | 2011-07-26 | 2011-12-21 | 136.5d | 0d | MECHANICAL [7458 h]; Cost [407301 AED] | 407,300.87 | 285,110.61 | S08PA23023C0 | GA | C | P2 | PA | ME | 230 | 23 | PP | BILL 6 | B06 | S1 | 1F | R00 | ACF04 | 230 | 25 | 60 | 65 | 30 | 1S | CP | MEP | M1F | 0 | 0 | 0 | 0 |  |  | 47241.8 |  |  |  |
| GP2PA26001C0 |  | GA-P2 ; 1st Fix, Inst of Trunking/Conduiting (Public Area) | 156d | 2011-05-24 A | 2011-11-21 | GP2PA23001C0, GP2S107807C0, GP2S207807C0 | 80% | 31.2d | 2011-05-10 | 2011-11-15 | 85.49d | 0d | ELECTRICAL [2217.6 h]; Cost [24536.7 AED] | 24,536.7 | 19,629.36 | S08PA26001C0 | GA | C | P2 | PA | ME | 260 | 01 | PP | BILL 6 | B06 | S1 | 1F | R00 | ACF04 | 260 | 15 | 75 | 75 | 50 | 1S | CP | MEP | M1F | 0 | 0 | 0 | 0 |  |  | 87061.8 |  |  |  |
| GP2PA27010C0 |  | GA-P2 ; 1st Fix, Inst of Trunking for ELV system (Public Area) | 66d | 2011-05-24 A | 2011-12-11 | GP2PA23001C0, GP2PA26001C0 SS+12d, GP2S107807C0, GP2S207807C0 | 30% | 46.2d | 2011-05-24 | 2011-08-10 | 85.49d | 0d | ELECTRICAL [1467.6 h]; Cost [31671.7 AED] | 31,671.72 | 9,501.52 | S08PA27010C0 | GA | C | P2 | PA | ME | 270 | 10 | PP | BILL 6 | B06 | S1 | 1F | R00 | ACF04 | 270 | 15 | 90 |  |  | 1S | CP | MEP | M1F | 0 | 0 | 0 | 0 |  |  | 71020.5 |  |  |  |
| GP2PA09203C0 |  | GA-P2 ; Partitions early wall & 1st face (Public Area) | 31.88d | 2011-05-31 A | 2011-10-11 | GP2PA09201C0, OGNMU00015S0 | 75% | 7.97d | 2011-05-31 | 2011-07-07 | 116.45d | 0d | PARTITIONS [88 m]; PARTITIONS [951 h]; Cost |  |  | S08PA09203C0 | GA | C | P2 | PA | PT | 092 | 03 | PP | BILL 6 | B06 | S1 | 2F | R00 | ACF06 | 092 |  |  |  |  |  | CP | GP | P1F | 0 | 0 | 0 | 0 | 314 | 945 |  |  |  |  |
| GP2PA26005C0 |  | GA-P2 ; 2nd Fix, Wiring for Power/Lighting/Emergency (Public Area) | 60d | 2011-06-07 A | 2011-12-15 | GP2PA09203C0 | 15% | 51d | 2011-09-26 | 2011-12-10 | 172.73d | 0d | ELECTRICAL [242.4 h]; Cost [12852.6 AED] | 12,852.56 | 1,927.88 | S08PA26005C0 | GA | C | P2 | PA | ME | 260 | 05 | PP | BILL 6 | B06 | S1 | 2F | R00 | ACF07 | 260 |  | 45 |  |  | 2n | CP | MEP |  |  |  |  |  |  |  | 7159.02 |  |  |  |
| GP2PA26013C0 |  | GA-P2 ; 1st Fix, Inst of Cable Tray (Public Area) | 168d | 2011-06-13 A | 2011-11-23 | GP2PA23001C0, GP2PA27010C0 SS+10d, GP2S107807C0, GP2S207807C0 | 80% | 33.6d | 2011-06-13 | 2012-01-05 | 85.49d | 0d | ELECTRICAL [244.8 h]; Cost [13923.6 AED] | 13,923.6 | 11,138.88 | S08PA26013C0 | GA | C | P2 | PA | ME | 260 | 13 | PP | BILL 6 | B06 | S1 | 1F | R00 | ACF04 | 260 |  | 70 | 80 | 50 | 1S | CP | MEP | M1F |  |  |  |  |  |  | 11180.97 |  |  |  |
| GP2PA08103C0 |  | GA-P2 ; Door Frames (Public Area) | 36d | 2011-07-10 A | 2012-02-12 | GP2PA09201C0, GNHE08101C0 FS+130d | 5% | 34.2d | 2011-07-11 | 2011-08-21 | 34.09d | 0d | ASSORTED DOORS [78 h]; Cost |  |  | S08PA08103C0 | GA | C | P2 | PA | DO | 081 | 03 | PP | BILL 6 | B06 | S1 | DF | R00 | ACF06 | 081 |  |  |  |  |  | CP |  |  |  |  |  |  | 316 | 947 |  | 08 |  |  |
| GP2PA23015C0 |  | GA-P2 ; 2nd Fix, Insulation of CHW pipe & Duct (Public Area) | 60d | 2011-07-10 A | 2012-02-13 | GP2PA23009C0 SS+10d, GP2PA23017C0, GP2PA23023C0 | 15% | 51d | 2011-09-22 | 2011-12-07 | 123.5d | 70.08d | MECHANICAL [1699.2 h]; Cost [92761.9 AED] | 92,761.87 | 13,914.28 | S08PA23015C0 | GA | C | P2 | PA | ME | 230 | 15 | PP | BILL 6 | B06 | S1 | 2F | R00 | ACF07 | 230 |  | 45 |  |  | 2n | CP | MEP |  |  |  |  |  |  |  |  |  |  |  |
| GP2PA23017C0 |  | GA-P2 ; 1st Fix, Inst of CHW pipe (Public Area) | 78d | 2011-07-10 A | 2011-11-30 | GP2PA21111C0 SS+14d, GP2PA23001C0 | 50% | 39d | 2011-07-02 | 2011-10-03 | 123.5d | 0d | MECHANICAL [1650 h]; Cost [90112.2 AED] | 90,112.24 | 45,056.12 | S08PA23017C0 | GA | C | P2 | PA | ME | 230 | 17 | PP | BILL 6 | B06 | S1 | 1F | R00 | ACF04 | 230 |  | 60 | 45 | 30 | 1S | CP | MEP | M1F | 0 | 0 | 0 | 0 |  |  | 52263.06 |  |  |  |
| GP2PA26009C0 |  | GA-P2 ; 2nd Fix, Inst of Wall conduites (Public Area) | 60d | 2011-08-10 A | 2011-11-28 | GP2PA09201C0 | 25% | 45d | 2011-07-31 | 2011-10-10 | 95.49d | 61.4d | ELECTRICAL [451.2 h]; Cost [24536.7 AED] | 24,536.7 | 6,134.17 | S08PA26009C0 | GA | C | P2 | PA | ME | 260 | 09 | PP | BILL 6 | B06 | S1 | 2F | R00 | ACF07 | 260 |  | 45 | 15 | 0 | 2n | CP | MEP |  | 0 | 0 | 0 | 0 |  |  |  |  |  |  |
| GP2PA23008C0 |  | GA-P2 ; 1st Fix, Inst of VCD's/FD's (Public Area) | 54d | 2011-09-05 A | 2012-01-25 | GP2PA23023C0 | 10% | 48.6d | 2011-11-01 | 2012-01-09 | 138.9d | 85.47d | MECHANICAL [673.2 h]; Cost [36751.3 AED] | 36,751.29 | 3,675.13 | S08PA23008C0 | GA | C | P2 | PA | ME | 230 | 08 | PP | BILL 6 | B06 | S1 | 1F | R00 | ACF04 | 230 |  | 50 |  |  | 1S |  | MEP | M1F |  |  |  |  |  |  |  |  |  |  |
| GP2PA23011C0 |  | GA-P2 ; 2nd Fix, Inst of Equipment (FCU,FAN) (Public Area) | 48d | 2011-09-05 A | 2012-05-10 | GP2PA09205C0 | 15% | 40.8d | 2012-02-05 | 2012-04-01 | 174.63d | 121.2d | MECHANICAL [406.8 h]; Cost [93591 AED] | 93,591.02 | 14,038.65 | S08PA23011C0 | GA | C | P2 | PA | ME | 230 | 11 | PP | BILL 6 | B06 | S1 | 2F | R00 | ACF04 | 230 |  | 25 |  |  | 2n |  | MEP |  |  |  |  |  |  |  | 48854.85 |  | H |  |
| GP2PA22011C0 |  | GA-P2 ; 2nd Fix, Drainage/Water pipe (wall) (Public Area) | 48d | 2011-10-02 | 2011-12-01 | GP2PA09201C0 |  |  |  |  | 92.49d | 58.4d | PLUMBING [644.4 h]; Cost |  |  | S08PA22011C0 | GA | C | P2 | PA | ME | 220 | 11 | PP | BILL 6 | B06 | S1 | 2F | R00 | ACF07 | 220 |  | 10 |  |  | 2n |  | MEP |  |  |  |  |  |  |  |  |  |  |  |
| GP2PA23009C0 |  | GA-P2 ; 2nd Fix, Inst of VAV'S CHW connection (Public Area) | 48d | 2011-12-01 | 2012-01-28 | GP2PA23017C0 |  |  |  |  | 123.5d | 0d | MECHANICAL [788.4 h]; Cost |  |  | S08PA23009C0 | GA | C | P2 | PA | ME | 230 | 09 | PP | BILL 6 | B06 | S1 | 2F | R00 | ACF07 | 230 |  | 50 |  |  | 2n |  | MEP |  |  |  |  |  |  |  |  |  |  |  |
| GP2PA27001C0 |  | GA-P2 ; 1st Fix, Wiring/ Cabling work (Public Area) | 54d | 2011-12-11 | 2012-02-14 | GP2PA26001C0, GP2PA26013C0, GP2PA27010C0 |  |  |  |  | 123.3d | 69.88d | ELECTRICAL [242.4 h]; Cost |  |  | S08PA27001C0 | GA | C | P2 | PA | ME | 270 | 01 | PP | BILL 6 | B06 | S1 | 1F | R00 | ACF04 | 270 |  | 45 |  |  | 1S |  | MEP | M1F |  |  |  |  |  |  | 7159.02 |  |  |  |
| GP2PA26015C0 |  | GA-P2 ; Final Fix, Termination & Gladding of Cables (Public Area) | 30d | 2011-12-15 | 2012-01-21 | GP2PA26005C0 |  |  |  |  | 268.73d | 215.31d | ELECTRICAL [62.4 h]; Cost |  |  | S08PA26015C0 | GA | C | P2 | PA | ME | 260 | 15 | PP | BILL 6 | B06 | S1 | FF | R00 | ACF07 | 260 |  |  |  |  | FF |  | MEP |  |  |  |  |  |  |  |  |  |  |  |
| GP2PA01005C0 |  | GA-P2 ; 2nd, Wall Inspection by Consultant (Public Area) | 0d | 2012-02-12 | 2012-02-12 | GP2PA08103C0 FF, GP2PA22011C0, GP2PA26009C0 |  |  |  |  | 34.09d | 0d | Cost |  |  | S08PA01005C0 | GA | C | P2 | PA | ME | 010 | 05 | PP | BILL 6 | B06 | S1 | WI | R00 | ACF07 | 010 |  |  |  |  | 2n |  | MEP |  |  |  |  |  |  |  |  |  |  |  |
| GP2PA09205C0 |  | GA-P2 ; Partitions Closing (Public Area) | 35.88d | 2012-02-12 | 2012-03-25 | GAFOA09208C1 FF, GP2CO04407C0 FF, GP2PA01005C0, GP2PA09203C0, GP2PA22005C0, GP2PA22019C0, GP2PA08103C0 FF |  |  |  |  | 34.09d | 0d | PARTITIONS [88 m]; PARTITIONS [1230 h]; Cost |  |  | S08PA09205C0 | GA | C | P2 | PA | PT | 092 | 05 | PP | BILL 6 | B06 | S1 | FF | R00 | ACF06 | 092 |  |  |  |  |  |  | GP | P2F |  |  |  |  | 315 | 946 |  |  |  |  |
| GP2PA05502C0 |  | GA-P2 ; Staircase Frame (ST-24,25) & Glass floor (Public Area) | 72d | 2012-03-25 | 2012-06-18 | GP2PA09205C0 |  |  |  |  | 196.43d | 159d | SECONDARY STEEL [831 h]; STRUCTURAL STEEL [31 T(Fe)]; Cost |  |  | S08PA09201C0 | GA | C | P2 | PA | SW | 055 | 02 | PP | BILL 6 | B06 | S1 | 01 | R00 | ACF03 | 055 |  |  |  |  |  |  | MEP |  |  |  |  |  | 313 | 944 |  |  |  |  |
| GP2PA09901C0 |  | GA-P2 ; Wall Prime & 1st coat (Public Area) | 36d | 2012-03-25 | 2012-05-06 | GP2PA09205C0, OGNMU00057S0 |  |  |  |  | 37.43d | 0d | WALL PAINT [82 h]; WALL PAINT [101 m2]; Cost |  |  | S08PA09901C0 | GA | C | P2 | PA | PA | 099 | 01 | PP | BILL 6 | B06 | S1 | 01 | R00 | ACF06 | 099 |  |  |  |  |  |  |  |  |  |  |  |  | 328 | 956 |  |  |  |  |
| GP2PA26007C0 |  | GA-P2 ; 2nd Fix, Cable Pulling (Public Area) | 48d | 2012-03-25 | 2012-05-20 | GP2PA09201C0 SS+6d, GP2PA09205C0 |  |  |  |  | 167.43d | 129d | ELECTRICAL [1117.2 h]; Cost |  |  | S08PA26007C0 | GA | C | P2 | PA | ME | 260 | 07 | PP | BILL 6 | B06 | S1 | 2F | R00 | ACF07 | 260 |  | 20 |  |  | 2n |  | MEP |  |  |  |  |  |  |  |  |  |  |  |
| GP2PA26011C0 |  | GA-P2 ; 2nd Fix, Inst of Equipment (DB) (Public Area) | 60d | 2012-03-25 | 2012-06-03 | GP2PA09205C0 |  |  |  |  | 125.43d | 87d | ELECTRICAL [524.4 h]; Cost |  |  | S08PA26011C0 | GA | C | P2 | PA | ME | 260 | 11 | PP | BILL 6 | B06 | S1 | 2F | R00 | ACF04 | 260 |  | 45 |  |  | 2n |  | MEP |  |  |  |  |  |  |  |  |  | E |  |
| GP2PA26053C0 |  | GA-P2 ; 2nd Fix, Wiring / Cabling (Public Area) | 48d | 2012-03-25 | 2012-05-20 | GP2PA09203C0, GP2PA09205C0 |  |  |  |  | 167.43d | 129d | ELECTRICAL [242.4 h]; Cost |  |  | S08PA26053C0 | GA | C | P2 | PA | ME | 260 | 53 | PP | BILL 6 | B06 | S1 | 2F | R00 | ACF07 | 260 |  | 25 |  |  | 2n |  | MEP |  |  |  |  |  | 389 | 977 |  |  |  |  |
| GP2PA05501C0 |  | GA-P2 ; Handrails & balustrade (Public Area) | 36d | 2012-05-06 | 2012-06-18 | GP2PA09901C0, GAFT1805509C0, GAFT1405509C0, GAFT1905509C0, GAFT1705509C0, GAFT2005509C0, GAFT2105509C0 |  |  |  |  | 37.43d | 0d | SECONDARY STEEL [2305 h]; Cost |  |  | S08PA05501C0 | GA | C | P2 | PA | SW | 055 | 01 | PP | BILL 6 | B06 | S1 | 01 | R00 | ACF03 | a |  |  |  |  |  |  |  |  |  |  |  |  |  |  |  |  |  |  |
| GP2PA09501C0 |  | GA-P2 ; Ceiling Grid and Service Tile (Public Area) | 36d | 2012-05-06 | 2012-06-18 | GP2PA09205C0 SS+15d, GP2PA21117C0, GP2PA23008C0, GP2PA23009C0, GP2PA23015C0, GP2PA27001C0, OGNMU00023S0, OGNMU00037S0, GP2PA26005C0, GP2PA09901C0 |  |  |  |  | 53.43d | 0d | CEILING GRID FOR GYPSUM [1840.86 h]; CEILING GRID FOR GYPSUM [157.42 m2]; Cost |  |  | S08PA09501C0 | GA | C | P2 | PA | CE | 095 | 01 | PP | BILL 6 | B06 | S1 | 01 | R00 | ACF06 | 095 |  |  |  |  |  |  |  |  |  |  |  |  | 323 | 952 |  |  |  |  |
| GP2PA04401C0 |  | GA-P2 ; Stone Bench Framing (Public Area) | 60d | 2012-06-18 | 2012-08-29 | GP2PA09501C0 |  |  |  |  | 76.43d | 0d | FACADE NATURAL STONE PANEL [249.3 h]; Cost |  |  | S08PA09201C0 | GA | C | P2 | PA | FA | 044 | 01 | PP | BILL 6 | B06 | S1 | SF | R00 | ACF05 | 044 |  |  |  |  |  |  | FA |  |  |  |  |  | 313 | 944 |  |  |  |  |
| GP2PA09601C0 |  | GA-P2 ; Flooring (stone) (Public Area) | 105d | 2012-06-18 | 2012-10-21 | GP2PA09205C0, OGNMU00055S0, GAFCI22002R02 FS+65d, GP2CO04404C0 SS+24d, GP2PA05501C0, A10410 |  |  |  |  | 37.43d | 0d | RUBBER FLOOR [120 h]; RUBBER FLOOR [288 m2]; Cost |  |  | S08PA09601C0 | GA | C | P2 | PA | FF | 096 | 01 | PP | BILL 6 | B06 | S1 | 03 | R00 | ACF06 | ST |  |  |  |  |  |  |  |  |  |  |  |  | 326 | 955 |  |  |  | R3 |
| GP2PA09702C0 |  | GA-P2 ; Public Area Stone wall & MWP, Glass wall installation (Public Area) | 72d | 2012-06-18 | 2012-09-12 | GP2PA09205C0, OGNMU00051S0, GP2PA09601C0 SS |  |  |  |  | 41.43d | 3d | ASSORTED WALL FINISH [3545 h]; ASSORTED WALL FINISH [4076 m2]; Cost |  |  | S08PA09201C0 | GA | C | P2 | PA | WF | 097 | 02 | PP | BILL 6 | B06 | S1 | 01 | R00 | ACF06 | 097 |  |  |  |  |  |  |  |  |  |  |  |  | 313 | 944 |  |  |  |  |
| GP2PA09905C0 |  | GA-P2 ; Ceiling Prime & 1st coat (Public Area) | 36d | 2012-06-18 | 2012-07-30 | GP2PA09501C0 |  |  |  |  | 124.43d | 0d | CEILING PAINT [279 h]; CEILING PAINT [348 m2]; Cost |  |  | S08PA09905C0 | GA | C | P2 | PA | PA | 099 | 05 | PP | BILL 6 | B06 | S1 | 01 | R00 | ACF06 | 099 |  |  |  |  |  |  |  |  |  |  |  |  | 330 | 958 |  |  |  |  |
| GP2PA21115C0 |  | GA-P2 ; 2nd Fix, Inst of Sprinkler droppers (Public Area) | 48d | 2012-06-18 | 2012-08-13 | GP2PA09501C0 |  |  |  |  | 65.43d | 0d | MECHANICAL [1734 h]; Cost |  |  | S08PA21115C0 | GA | C | P2 | PA | ME | 211 | 15 | PP | BILL 6 | B06 | S1 | 2F | R00 | ACF07 | 211 |  |  |  |  | 2n |  | MEP |  |  |  |  |  |  |  |  |  |  |  |
| GP2PA23021C0 |  | GA-P2 ; 2nd Fix, Inst of Flexible Duct & Plenum boxes (Public Area) | 54d | 2012-06-18 | 2012-08-22 | GP2PA09205C0, GP2PA09501C0 |  |  |  |  | 53.43d | 0d | MECHANICAL [1962 h]; Cost |  |  | S08PA23021C0 | GA | C | P2 | PA | ME | 230 | 21 | PP | BILL 6 | B06 | S1 | 2F | R00 | ACF07 | 230 |  |  |  |  | 2n |  | MEP |  |  |  |  |  |  |  |  |  |  |  |
| GP2PA26017C0 |  | GA-P2 ; Final Fix, Inst of Ceiling rose (Public Area) | 30d | 2012-06-18 | 2012-07-23 | GP2PA09501C0 |  |  |  |  | 65.43d | 0d | ELECTRICAL [34.8 h]; Cost |  |  | S08PA26017C0 | GA | C | P2 | PA | ME | 260 | 17 | PP | BILL 6 | B06 | S1 | FF | R00 | ACF07 | 260 |  |  |  |  | FF |  | MEP |  |  |  |  |  |  |  |  |  |  |  |
| GP2PA27002C0 |  | GA-P2 ; 2nd Fix, Wiring Droppers (Public Area) | 48d | 2012-06-18 | 2012-08-13 | GP2PA09501C0 |  |  |  |  | 65.43d | 0d | ELECTRICAL [242.4 h]; Cost |  |  | S08PA27002C0 | GA | C | P2 | PA | ME | 270 | 02 | PP | BILL 6 | B06 | S1 | 2F | R00 | ACF07 | 270 |  |  |  |  | 2n |  | MEP |  |  |  |  |  |  |  |  |  |  |  |
| GP2PA27020C0 |  | GA-P2 ; 2nd Fix, Inst of ELV Equipment (Panels) (Public Area) | 60d | 2012-06-18 | 2012-08-29 | GP2PA09205C0, GP2PA09501C0 |  |  |  |  | 53.43d | 15d | ELECTRICAL [1618.8 h]; Cost |  |  | S08PA27020C0 | GA | C | P2 | PA | ME | 270 | 20 | PP | BILL 6 | B06 | S1 | 2F | R00 | ACF04 | 270 |  |  |  |  | 2n |  | MEP |  |  |  |  |  |  |  |  |  | E |  |
| GP2PA26003C0 |  | GA-P2 ; Final Fix, Inst of Light fittings (Public Area) | 48d | 2012-07-23 | 2012-09-19 | GP2PA09501C0, GP2PA26017C0 |  |  |  |  | 65.43d | 12d | ELECTRICAL [7791.6 h]; Cost |  |  | S08PA26003C0 | GA | C | P2 | PA | ME | 260 | 03 | PP | BILL 6 | B06 | S1 | FF | R00 | ACF07 | 260 |  |  |  |  | FF |  | MEP |  |  |  |  |  |  |  |  |  |  |  |
| GP2PA09903C0 |  | GA-P2 ; Wall Final Paint (Public Area) | 36d | 2012-07-30 | 2012-09-12 | GP2PA09901C0, GP2PA09905C0 |  |  |  |  | 124.43d | 87d | WALL PAINT [44 h]; WALL PAINT [54 m2]; Cost |  |  | S08PA09903C0 | GA | C | P2 | PA | PA | 099 | 03 | PP | BILL 6 | B06 | S1 | 02 | R00 | ACF06 | 099 |  |  |  |  |  |  |  |  |  |  |  |  | 329 | 957 |  |  |  |  |
| GP2PA21113C0 |  | GA-P2 ; Final Fix, Inst of Sprinklers head/ Extinguisher (Public Area) | 30d | 2012-08-13 | 2012-09-19 | GP2PA09501C0, GP2PA21115C0 |  |  |  |  | 65.43d | 12d | MECHANICAL [297.6 h]; Cost |  |  | S08PA21113C0 | GA | C | P2 | PA | ME | 211 | 13 | PP | BILL 6 | B06 | S1 | FF | R00 | ACF07 | 211 |  |  |  |  | FF |  | MEP |  |  |  |  |  |  |  |  |  |  |  |
| GP2PA27030C0 |  | GA-P2 ; Final Fix, Inst of ELV devise (Detector/Speaker) (Public Area) | 30d | 2012-08-13 | 2012-09-19 | GP2PA09501C0, GP2PA27002C0 |  |  |  |  | 65.43d | 12d | ELECTRICAL [710.4 h]; Cost |  |  | S08PA27030C0 | GA | C | P2 | PA | ME | 270 | 30 | PP | BILL 6 | B06 | S1 | FF | R00 | ACF07 | 270 |  |  |  |  | FF |  | MEP |  |  |  |  |  |  |  |  |  |  |  |
| GP2PA23019C0 |  | GA-P2 ; Final Fix, Inst of Grilles & Diffusers (Public Area) | 36d | 2012-08-22 | 2012-10-03 | GP2PA09501C0, GP2PA23021C0, GP2GN03300R02 FF |  |  |  |  | 53.43d | 0d | MECHANICAL [1030.8 h]; Cost |  |  | S08PA23019C0 | GA | C | P2 | PA | ME | 230 | 19 | PP | BILL 6 | B06 | S1 | FF | R00 | ACF07 | 230 |  |  |  |  | FF |  | MEP |  |  |  |  |  |  |  |  |  |  |  |
| GP2PA04402C0 |  | GA-P2 ; Stone Bench & Glass installation (Public Area) | 60d | 2012-08-29 | 2012-11-10 | GP2PA04401C0 |  |  |  |  | 76.43d | 39d | FACADE NATURAL STONE PANEL [249.3 h]; Cost |  |  | S08PA09201C0 | GA | C | P2 | PA | FA | 044 | 02 | PP | BILL 6 | B06 | S1 | SF | R00 | ACF05 | 044 |  |  |  |  |  |  | FA |  |  |  |  |  | 313 | 944 |  |  |  |  |
| GP2PA09701C0 |  | GA-P2 ; Wall finishes (ST, WD, WC) (Public Area) | 30d | 2012-09-16 | 2012-10-21 | GP2PA09702C0, GP2PA26011C0, GP2PA27020C0, GAFCI22002R02 FS+164d, GP2CO04404C0, GP2PA09601C0 FF, G03CO09701R2 FF |  |  |  |  | 38.43d | 0d | ASSORTED WALL FINISH [256 h]; ASSORTED WALL FINISH [294 m2]; Cost |  |  | S08PA09701C0 | GA | C | P2 | PA | WF | 097 | 01 | PP | BILL 6 | B06 | S1 | 01 | R00 | ACF06 | 097 |  |  |  |  |  |  |  |  |  |  |  |  | 105 | 1002 |  |  |  |  |
| GP2PA01006C0 |  | GA-P2 ; 2nd, Ceiling Inspection by Consultants (Public Area) | 0d | 2012-10-03 | 2012-10-03 | GP2PA21115C0, GP2PA23009C0, GP2PA23011C0, GP2PA23015C0, GP2PA27002C0, GP2PA09501C0, GP2PA21113C0, GP2PA23019C0, GP2PA26003C0, GP2PA26017C0, GP2PA27030C0, GP2PA26015C0 |  |  |  |  | 53.43d | 15d | Cost |  |  | S08PA01006C0 | GA | C | P2 | PA | ME | 010 | 06 | PP | BILL 6 | B06 | S1 | CI | R00 | ACF07 | 010 |  |  |  |  | 2n |  | MEP |  |  |  |  |  |  |  |  |  |  |  |
| GP2PA08107C0 |  | GA-P2 ; Doors (Public Area) | 36d | 2012-10-21 | 2012-12-06 | GP2PA08103C0, GP2PA09901C0, GP2PA09601C0 |  |  |  |  | 37.43d | 0d | ASSORTED DOORS [110 h]; ASSORTED DOORS [11 no]; Cost |  |  | S08PA08107C0 | GA | C | P2 | PA | DO | 081 | 07 | PP | BILL 6 | B06 | S1 | DR | R00 | ACF06 | 081 |  |  |  |  |  |  |  |  |  |  |  |  | 317 | 948 |  | 08 |  |  |
| GP2PA09503C0 |  | GA-P2 ; Ceiling closure - ACT/Gypsum (Public Area) | 26d | 2012-10-21 | 2012-11-24 | GAFOA09507C1, GP2PA01006C0, GP2PA21115C0, GP2PA26005C0, GP2PA27001C0, GP2PA27002C0, OGNMU00023S0, OGNMU00037S0, GP2PA09701C0, GP2PA23021C0, GP2PA26053C0, GP2PA26007C0 |  |  |  |  | 38.43d | 0d | ASSORTED CEILING FINISH [1040.58 h]; CEILING GYPSUM [51.66 h]; ASSORTED CEILING FINISH [1692 m2]; CEILING GYPSUM [157 m2]; Cost |  |  | S08PA09503C0 | GA | C | P2 | PA | CE | 095 | 03 | PP | BILL 6 | B06 | S1 | 02 | R00 | ACF06 | 095 |  |  |  |  |  |  |  |  |  |  |  |  | 324 | 953 |  |  |  |  |
| GP2PA11002C0 |  | GA-P2 ; Recep Desk & Furniture installation (Public Area) | 36d | 2012-10-21 | 2012-12-06 | GP2PA09205C0, GAFCI22002R02 FS+184d, GP2PA09601C0 |  |  |  |  | 55.43d | 18d | FF&E [19 h]; FF&E [9.72 no]; Cost |  |  | S08PA09201C0 | GA | C | P2 | PA | WO | 110 | 02 | PP | BILL 6 | B06 | S1 | 10 | R00 | ACF08 | f |  |  |  |  |  |  |  |  |  |  |  |  | 313 | 944 |  |  |  |  |
| GP2PA11009C0 |  | GA-P2 ; Signage (Public Area) | 13.75d | 2012-10-21 | 2012-11-07 | GP2PA09701C0, OGNMU00071S0 |  |  |  |  | 77.68d | 40.25d | SIGNAGES [15 h]; SIGNAGES [15.16 no]; Cost |  |  | S08PA11009C0 | GA | C | P2 | PA | SA | 110 | 09 | PP | BILL 6 | B06 | S1 | 09 | R00 | ACF08 | c |  |  |  |  |  |  |  |  |  |  |  |  | 322 | 951 |  | 08 |  |  |
| GP2PA09670C1 |  | GA-P2, Carpet Tile Finish (Public Area) | 0d | 2012-11-24 | 2012-11-24 | GP2PA09907C0 SS, GP2PA09903C0 SS |  |  |  |  | 64.93d | 23.43d | Cost |  |  |  | GA | C | P2 | PA | FF | 096 |  |  |  | B06 |  |  | R00 | ACF06 | CPT |  |  |  |  |  |  | CPT |  |  |  |  |  |  |  |  |  |  |  |
| GP2PA09907C0 |  | GA-P2 ; Ceiling Final paint (Public Area) | 18d | 2012-11-24 | 2012-12-16 | GP2PA09905C0, GP2PA09503C0 |  |  |  |  | 47.43d | 0d | CEILING PAINT [151 h]; CEILING PAINT [188 m2]; Cost |  |  | S08PA09907C0 | GA | C | P2 | PA | PA | 099 | 07 | PP | BILL 6 | B06 | S1 | 02 | R00 | ACF06 | 099 |  |  |  |  |  |  |  |  |  |  |  |  | 331 | 959 |  |  |  |  |
| GP2PA26019C0 |  | GA-P2 ; Final Fix, Inst of Switch/Sockets (Public Area) | 18d | 2012-11-24 | 2012-12-16 | GP2PA09901C0, GP2PA09503C0 |  |  |  |  | 38.43d | 0d | ELECTRICAL [132 h]; Cost |  |  | S08PA26019C0 | GA | C | P2 | PA | ME | 260 | 19 | PP | BILL 6 | B06 | S1 | FF | R00 | ACF07 | 260 |  |  |  |  | FF |  | MEP |  |  |  |  |  |  |  |  |  |  |  |
| GP2PA08709C0 |  | GA-P2 ; Ironmongery (Public Area) | 18d | 2012-12-06 | 2012-12-27 | GP2PA08107C0, GZ9GZ08153R2 FF, DV10GZ08153R2 FF |  |  |  |  | 37.43d | 0d | IRONMONGERY [80 h]; IRONMONGERY [8 no]; Cost |  |  | S08PA08709C0 | GA | C | P2 | PA | DO | 087 | 09 | PP | BILL 6 | B06 | S1 | IM | R00 | ACF06 | 087 |  |  |  |  |  |  |  |  |  |  |  |  | 322 | 951 |  | 08 |  |  |

| ID | WBS | Activity | Type | Duration | Start | Finish | Predecessors | Complete | Remaining | Planned start | Planned finish | Total float | Free float | Resources | change id | CCAD BUILDING(SET) | CCAD PHASE(SET) | CCAD FLOOR(SET) | CCAD ZONE(SET) | CCAD WORK(SET) | CCAD SECTION(SET) | CCAD SERIAL No.(SET) | CCAD RESPONSIBILITY(SET) | CCAD CBS(SET) | CCAD BILL(SET) | CCAD HANDOVER(SET) | CCAD TAG(SET) | CCAD REV(SET) | CCADACF (SET) | CCAD SSCF | Actual Cost | RENZ % COMPLETE | Phase | Area/ Department | Grids | Are | Weight & Nos | Process | Levels | CCAD CSA | user_number8 | user_integer1 | user_integer2 | user_number7 | Claimed This Month | P_811 | P_711 | CCAD (VO) | Change Order # | NEW ACTIVITY ID | CCAD DIVISION(SET) |
| --- | --- | --- | --- | --- | --- | --- | --- | --- | --- | --- | --- | --- | --- | --- | --- | --- | --- | --- | --- | --- | --- | --- | --- | --- | --- | --- | --- | --- | --- | --- | --- | --- | --- | --- | --- | --- | --- | --- | --- | --- | --- | --- | --- | --- | --- | --- | --- | --- | --- | --- | --- |
|  | 10 | **Precommissioning Tesing & snagging (Public Area)** |  |  | 2012-12-16 | 2013-01-17 |  |  |  |  |  |  |  |  |  |  |  |  |  |  |  |  |  |  |  |  |  |  |  |  |  |  |  |  |  |  |  |  |  |  |  |  |  |  |  |  |  |  |  |  |  |
| GP2TS01805C0 |  | GA-P2 ; MEP de-snag, FIREM sign-off |  | 9d | 2012-12-16 | 2012-12-26 | GP2PA26015C0, GP2PA21113C0, GP2PA23019C0, GP2PA26017C0, GP2PA26003C0, GP2PA27030C0, GP2PA26019C0, GP2PA09503C0 |  |  |  |  | 38.43d | 1d | TESTING & COMMISSIONING [510 h]; Cost | GP2TS01801C0 | GA | C | P2 | TS | SC | 018 | 01 | PP | BILL 6 | B06 | S1 | 01 | R00 | ACF07 | 018 |  |  |  |  |  |  |  |  |  |  |  |  |  |  |  |  |  |  |  |  |  |
| GP2TS01808C0 |  | GA-P2 ; Touch-up & Clean / JV inspection /CIR /De-snag |  | 17.5d | 2012-12-27 | 2013-01-17 | GP2CO04401C0, GP2CO04404C0, GP2CO04404C10, GP2CO04407C10, GP2CO04408C0, GP2CO04408C10, GP2CO04410C10, GP2CO04411C10, GP2CO04413C0, GP2CO04413C10, GP2PA04401C0, GP2PA04402C0, GP2PA05501C0, GP2PA05502C0, GP2PA08103C0, GP2PA08107C0, GP2PA08709C0, GP2PA09203C0, GP2PA09205C0, GP2PA09501C0, GP2PA09601C0, GP2PA09701C0, GP2PA09702C0, GP2PA09901C0, GP2PA09903C0, GP2PA09905C0, GP2PA09907C0, GP2PA11002C0, GP2PA11009C0, GP2PA21113C0, GP2PA23019C0, GP2PA26003C0, GP2PA26015C0, GP2PA26017C0, GP2PA26019C0, GP2PA27030C0, GP2TS01805C0, GAFT2105509C0, GP2PA09503C0 |  |  |  |  | 37.43d | 0d | TESTING & COMMISSIONING [128 h]; Cost | GP2TS01802C0 | GA | C | P2 | TS | SC | 018 | 02 | PP | BILL 6 | B06 | S1 | 02 | R00 | ACF07 | 018 |  |  |  |  |  |  |  |  |  |  |  |  |  |  |  |  |  |  |  |  |  |
| GP2TS01811C0 |  | GA-P2 ; Consultant's final de-snag inspection |  | 0d | 2013-01-17 | 2013-01-17 | GP2TS01808C0 |  |  |  |  | 37.43d | 9.43d | Cost | GP2TS01803C0 | GA | C | P2 | TS | SC | 018 | 03 | PP | BILL 6 | B06 | S1 | 03 | R00 | ACF07 | 018 |  |  |  |  |  |  |  |  |  |  |  |  |  |  |  |  |  |  |  |  |  |
|  | P1 | **Level Podium 1** |  |  | 2010-11-29 | 2013-01-29 |  |  |  |  |  |  |  |  |  |  |  |  |  |  |  |  |  |  |  |  |  |  |  |  |  |  |  |  |  |  |  |  |  |  |  |  |  |  |  |  |  |  |  |  |  |
|  | 01 | **Structure & Envelopment** |  |  | 2010-11-29 | 2012-11-17 |  |  |  |  |  |  |  |  |  |  |  |  |  |  |  |  |  |  |  |  |  |  |  |  |  |  |  |  |  |  |  |  |  |  |  |  |  |  |  |  |  |  |  |  |  |
| GP1S105101C0 |  | GA-P1 ; Erection of Structural Steel of POD 1 (Zone S1) |  | 11.15d | 2010-11-29 A | 2010-12-30 A | GP2S105103C0 | 100% |  | 2011-01-18 | 2011-01-31 |  |  | STRUCTURAL STEEL [4572 h]; STRUCTURAL STEEL [152 T(Fe)]; Cost | GP1S105101C0 | GA | C | P1 | S1 | ST | 051 | 01 |  |  | B06 | S1 | 01 | R00 | ACF03 | 051 | 4550428.07 | 100 | Z2 | GA | P12 | R | A6 | EREC | POD2 | ST |  |  |  |  |  |  |  |  |  |  |  |
| GP1S105103C0 |  | GA-P1 ; Alignment & welding of POD 1 (Zone S1) |  | 5d | 2010-12-07 A | 2011-01-05 A | GP1S105101C0 | 100% |  | 2011-02-08 | 2011-02-14 |  |  | STRUCTURAL STEEL [774 h]; Cost | GP1S105103C0 | GA | C | P1 | S1 | ST | 051 | 03 |  |  | B06 | S1 | 02 | R00 | ACF03 | 051 | 505603.12 | 100 | Z2 | GA | P12 | R | A6 | EREC | POD2 | ST |  |  |  |  |  |  |  |  |  |  |  |
| GP1S205101C0 |  | GA-P1 ; Erection of Structural Steel of POD 1 (Zone S2) |  | 11.11d | 2010-12-30 A | 2011-03-21 A | GP2S205103C0 | 100% |  | 2011-01-10 | 2011-01-23 |  |  | STRUCTURAL STEEL [3973 h]; STRUCTURAL STEEL [131 T(Fe)]; Cost | GP1S205101C0 | GA | C | P1 | S2 | ST | 051 | 01 |  |  | B06 | S1 | 01 | R00 | ACF03 | 051 | 3404865.76 | 100 | Z2 | GA | P12 | R | A6 | EREC | POD2 | ST |  |  |  |  |  |  |  |  |  |  |  |
| GP1S205103C0 |  | GA-P1 ; Alignment & welding of POD 1 (Zone S2) |  | 5d | 2011-01-05 A | 2011-03-25 A | GP1S205101C0 | 100% |  | 2011-01-24 | 2011-01-29 |  |  | STRUCTURAL STEEL [579 h]; Cost | GP1S205103C0 | GA | C | P1 | S2 | ST | 051 | 03 |  |  | B06 | S1 | 02 | R00 | ACF03 | 051 | 378318.42 | 100 | Z2 | GA | P12 | R | A6 | EREC | POD2 | ST |  |  |  |  |  |  |  |  |  |  |  |
| GP1S105305C0 |  | GA-P1 ; Metal Decking POD 1 (Zone S1) |  | 20d | 2011-01-16 A | 2011-02-19 A | GGLS105101C0, GP1S105103C0, GP1S205305C0 | 100% |  | 2011-03-03 | 2011-03-26 |  |  | METAL DECKING [2942 h]; METAL DECKING [3723 m2]; Cost | GP1S105305C0 | GA | C | P1 | S1 | ST | 053 | 05 |  |  | B06 | S1 | 03 | R00 | ACF03 | 053 | 418891.65 | 100 | Z2 | GA | P12 | R | A6 | MDEC | POD2 | ST |  |  |  |  |  |  |  |  |  |  |  |
| GP1S103399C0 |  | GA-P1 ; Concrete on Metal Decking POD 1 (Zone S1) |  | 10d | 2011-02-10 A | 2011-05-30 A | GP1S105305C0 | 100% |  | 2011-03-06 | 2011-03-17 |  |  | CONCRETE [33400 h]; CONCRETE [840 m3]; Cost | GP1S103399C0 | GA | C | P1 | S1 | CT | 033 | 99 |  |  | B06 | S1 | 08 | R00 | ACF03 | 033 |  | 100 | Z2 | GA | P12 | R | A6 | MDEC | POD2 |  |  |  |  |  |  |  |  |  |  |  |  |
| GP1S205305C0 |  | GA-P1 ; Metal Decking POD 1 (Zone S2) |  | 15d | 2011-02-16 A | 2011-03-19 A | GGLS205101C0, GP1S205103C0 | 100% |  | 2011-02-01 | 2011-02-17 |  |  | METAL DECKING [2201 h]; METAL DECKING [2786 m2]; Cost | GP1S205305C0 | GA | C | P1 | S2 | ST | 053 | 05 |  |  | B06 | S1 | 03 | R00 | ACF03 | 053 |  | 100 | Z2 | GA | P12 | R | A6 | MDEC | POD2 | ST |  |  |  |  |  |  |  |  |  |  |  |
| GP1S203399C0 |  | GA-P1 ; Concrete on Metal Decking POD 1 (Zone S2) |  | 10d | 2011-03-08 A | 2011-05-30 A | GP1S205305C0 | 100% |  | 2011-03-17 | 2011-03-29 |  |  | CONCRETE [9816 h]; CONCRETE [247 m3]; Cost | GP1S203399C0 | GA | C | P1 | S2 | CT | 033 | 99 |  |  | B06 | S1 | 08 | R00 | ACF03 | 033 |  | 100 | Z2 | GA | P12 | R | A6 | MDEC | POD2 |  |  |  |  |  |  |  |  |  |  |  |  |
| GP1CO04408C0 |  | GA-P1 ; C3 Bracket (Common Zone) |  | 136d | 2011-04-14 A | 2012-01-07 | GGLCO04408C0 SS, GP1S107807C0, GP1S207807C0 | 42% | 78.88d | 2011-10-15 | 2012-03-29 | 49.62d | 0d | FACADE CURTAIN WALL 3 [1889.7 h]; Cost | GP1CO04408C0 | GA | C | P1 | CO | FA | 044 | 08 | PP | BILL 6 | B06 | S1 | FC3 | R00 | ACF05 | 044 |  | 20 |  |  |  |  |  |  |  | FA | 0 | 0 | 0 | 0 | 131847.88 | 42 | 35 | CP |  |  |  |
| GP1S207807C0 |  | GA-P1 ; Cementitious Fire Proofing at POD 1 (Zone S2) |  | 12d | 2011-04-16 A | 2011-05-30 A | GGLS203399C0 | 100% |  | 2011-04-02 | 2011-04-16 |  |  | CEMENTITIOUS FIREPROOFING [2085 h]; CEMENTITIOUS FIREPROOFING [4170 m2]; Cost | GP1S207807C0 | GA | C | P1 | S2 | ST | 078 | 07 |  |  | B06 | S1 | 04 | R00 | ACF03 | 078 |  | 100 | Z2 | GA | P12 | R | A6 | FIRE | POD2 | ST |  |  |  |  |  |  |  |  |  |  |  |
| GP1S107807C0 |  | GA-P1 ; Cementitious Fire Proofing at POD 1 (Zone S1) |  | 14d | 2011-04-18 A | 2011-05-30 A | GGLS103399C0 | 100% |  | 2011-04-16 | 2011-05-02 |  |  | CEMENTITIOUS FIREPROOFING [2787 h]; CEMENTITIOUS FIREPROOFING [5573 m2]; Cost | GP1S107807C0 | GA | C | P1 | S1 | ST | 078 | 07 |  |  | B06 | S1 | 04 | R00 | ACF03 | 078 |  | 100 | Z2 | GA | P12 | R | A6 | FIRE | POD2 | ST |  |  |  |  |  |  |  |  |  |  |  |
| GP1CO04001C0 |  | GA-P1 ; Blockworks (Common Zone) |  | 23d | 2011-05-25 A | 2011-08-04 A | GP1S107807C0, GP1S207807C0 | 100% |  | 2011-06-11 | 2011-07-09 |  |  | BLOCKWORKS [431 h]; BLOCKWORKS [123 m2]; Cost | GP1CO04001C0 | GA | C | P1 | CO | BL | 040 | 01 | PP |  | B06 | S1 | BL | R00 | ACF06 | 040 |  | 5 |  |  |  |  |  |  |  |  |  |  |  |  | 21905.92 | 100 | 95 |  | 73 | 73 | 04 |
| GP1CO04003C0 |  | GA-P1 ; Plaster to Blockwork (Common Zone) |  | 24d | 2011-05-25 A | 2011-08-10 A | GP1CO04001C0 | 100% |  | 2011-07-10 | 2011-08-07 |  |  | BLOCKWORKS [13 h]; Cost | GP1CO04003C0 | GA | C | P1 | CO | BL | 040 | 03 | PP |  | B06 | S1 | BL | R00 | ACF06 | 040 |  | 5 |  |  |  |  |  |  |  |  |  |  |  |  | 5280.02 | 100 | 95 |  |  |  |  |
| GP1GN01903C0 |  | GA-P1 ; Temporary Enclosure | level of effort | 207.42d | 2011-06-04 A | 2012-06-10 | GP1TR09203C0 SS, GP1RG09203C0 SS, GP1PA09203C0 SS |  | 210.88d | 2011-06-04 | 2012-02-12 | 49.62d | 0d | Labor General [0.6 h]; Cost |  | GA | C | P1 | GEN | FA | GEN |  | PP |  | B06 |  | TE | R00 | ACF05 | 010 |  |  |  |  |  |  |  |  |  | FA |  |  |  |  |  | 35.99 | 23.14 |  |  |  |  |
| GP1CO04405C10 |  | GA-P1 ; S2 Bracket (Car Park Zone) |  | 12d | 2011-10-01 | 2011-10-13 | GP1S107807C0, GP1S207807C0, GP2CO04405C0, GP2CO04410C0 SS |  |  |  |  | 90.25d | 0d | FACADE NATURAL STONE PANEL [1331.1 h]; Cost | GP2CO04405C0 | GA | C | P1 | CO | FA | 044 | 05 | PP | BILL 6 | B06 | S1 | FS2 | R00 | ACF05 | 044 |  |  |  |  |  |  |  |  |  | FA |  |  |  |  |  |  |  |  |  |  |  |
| GP1CO04410C10 |  | GA-P1 ; S2 External Partition (Car Park Zone) |  | 60d | 2011-10-01 | 2011-12-14 | GP1CO04405C10 SS, GP1GN01903C0 FF |  |  |  |  | 90.25d | 60d | FACADE NATURAL STONE PANEL [1331.1 h]; Cost | GP2CO04410C0 | GA | C | P1 | CO | FA | 044 | 10 | PP | BILL 6 | B06 | S1 | FS2 | R00 | ACF05 | 044 |  |  |  |  |  |  |  |  |  | FA |  |  |  |  |  |  |  |  |  |  |  |
| GP1CO04407C10 |  | GA-P1 ; S2 Stone Panel (Car Park Zone) |  | 66d | 2011-12-15 | 2012-03-03 | GP1CO04410C10 SS, GP1CO04410C10 FF, GP2CO04407C0 SS |  |  |  |  | 30.25d | 0d | FACADE NATURAL STONE PANEL [6210.4 h]; Cost | GP2CO04407C0 | GA | C | P1 | CO | FA | 044 | 07 | PP | BILL 6 | B06 | S1 | FS2 | R00 | ACF05 | 044 |  |  |  |  |  |  |  |  |  | FA |  |  |  |  |  |  |  |  |  |  |  |
| GP1CO04431C0 |  | GA-P1 ; C3 Transom & Mullion (Common Zone) |  | 102d | 2012-01-07 | 2012-05-06 | GP1CO04408C0 |  |  |  |  | 49.62d | 0d | FACADE CURTAIN WALL 3 [7559.1 h]; Cost | GP1CO04431C0 | GA | C | P1 | CO | FA | 044 | 31 | PP | BILL 6 | B06 | S1 | FC3 | R00 | ACF05 | 044 |  |  |  |  |  |  |  |  |  | FA |  |  |  |  |  |  |  |  |  |  |  |
| GP1CO04404C0 |  | GA-P1 ; C3 Glazing (Common Zone) |  | 102d | 2012-02-12 | 2012-06-10 | GP1CO04431C0 SS+30d, GP1CO04431C0 FF, GP1GN01903C0 FF |  |  |  |  | 49.62d | 0d | FACADE CURTAIN WALL 3 [4760.7 h]; FACADE CURTAIN WALL 6 [519.7 h]; FACADE CURTAIN WALL 7 [273.6 h]; FACADE NATURAL STONE PANEL [1720.8 h]; FACADE CURTAIN WALL 3 [1740 m2]; FACADE CURTAIN WALL 6 [190 m2]; FACADE CURTAIN WALL 7 [100 m2]; FACADE NATURAL STONE PANEL [629 m2]; FACADE TOTAL QUANTITY m2 [2659 m2]; Cost | GP1CO04404C0 | GA | C | P1 | CO | FA | 044 | 04 | PP | BILL 6 | B06 | S1 | FC3 | R00 | ACF05 | 044 |  |  |  |  |  |  |  |  |  | FA |  |  |  |  |  |  |  |  |  |  |  |
| GP1CO04401C0 |  | GA-P1 ; VE Vestibule (Common Zone) |  | 42d | 2012-06-10 | 2012-07-30 | PGLS403391C0 FS+28d, GP2CO04401C0 SS |  |  |  |  | 144.62d | 0d | Labor General [278.3 h]; Cost | DP3CO04403C0 | GA | C | P1 | CO | FA | 044 | 03 | PP | BILL 6 | B06 | S1 | VE | R00 | ACF05 | 044 |  |  |  |  |  |  |  |  |  | FA |  |  |  |  |  |  |  |  |  |  |  |
| GP1CO04409C0 |  | GA-P1 ; CW-1 Bracket (Common Zone) |  | 60d | 2012-08-05 | 2012-10-16 | GP2CO04407C10 SS, PGLS103391C140 FS+26d, PGLS103391C160 FS+26d, PP1SX03373C0 FS+26d, PGLS103391C260 FS+26d, PGLS103392R02 FS+26d |  |  |  |  | 110.49d | 0d | Labor General [0.6 h]; Cost | GP3CO04407C0 | GA | C | P1 | CO | FA | 044 | 07 | PP | BILL 6 | B06 | S1 | CW | R00 | ACF05 | 044 |  |  |  |  |  |  |  |  |  | FA |  |  |  |  |  |  |  |  |  |  |  |
| GP1CO04411C0 |  | GA-P1 ; CW-1 External Partition (Common Zone) |  | 60d | 2012-08-21 | 2012-11-01 | GP1CO04409C0 SS+12d, GP1CO04409C0 FF |  |  |  |  | 110.49d | 0d | Labor General [0.6 h]; Cost | GP3CO04411C0 | GA | C | P1 | CO | FA | 044 | 11 | PP | BILL 6 | B06 | S1 | CW | R00 | ACF05 | 044 |  |  |  |  |  |  |  |  |  | FA |  |  |  |  |  |  |  |  |  |  |  |
| GP1CO04419C0 |  | GA-P1 ; CW-1 Stone Panel (Common Zone) |  | 60d | 2012-09-04 | 2012-11-17 | GP1CO04411C0 SS+12d, GP1CO04411C0 FF |  |  |  |  | 110.49d | 91.84d | Labor General [0.6 h]; Cost | GP3CO04410C0 | GA | C | P1 | CO | FA | 044 | 10 | PP | BILL 6 | B06 | S1 | CW | R00 | ACF05 | 044 |  |  |  |  |  |  |  |  |  | FA |  |  |  |  |  |  |  |  |  |  |  |

| ID | WBS | Activity | Duration | Start | Finish | Predecessors | Complete | Remaining | Planned start | Planned finish | Total float | Free float | Resources | Cost | Actual cost | user_number8 | user_integer1 | user_integer2 | user_number7 | Change Order # | NEW ACTIVITY ID | change id | RENZ % COMPLETE | Claimed This Month | P_811 | P_711 | CCAD BUILDING(SET) | CCAD PHASE(SET) | CCAD FLOOR(SET) | CCAD ZONE(SET) | CCAD WORK(SET) | CCAD SECTION(SET) | CCAD SERIAL No.(SET) | CCAD RESPONSIBILITY(SET) | CCAD BILL(SET) | CCAD HANDOVER(SET) | CCAD TAG(SET) | CCAD REV(SET) | CCAD (VO) | CCADACF (SET) | CCAD CSA | CCAD SSCF | Act Selector % | July2011 Target% Complete | CCAD SUB ZONE MEP(SET) | CCAD DIVISION(SET) | CCAD MEQ | IDDD | CCAD CBS(SET) |
| --- | --- | --- | --- | --- | --- | --- | --- | --- | --- | --- | --- | --- | --- | --- | --- | --- | --- | --- | --- | --- | --- | --- | --- | --- | --- | --- | --- | --- | --- | --- | --- | --- | --- | --- | --- | --- | --- | --- | --- | --- | --- | --- | --- | --- | --- | --- | --- | --- | --- |
|  | 02 | **TR Room** |  | 2011-05-16 | 2012-10-25 |  |  |  |  |  |  |  |  |  |  |  |  |  |  |  |  |  |  |  |  |  |  |  |  |  |  |  |  |  |  |  |  |  |  |  |  |  |  |  |  |  |  |  |  |
| GP1TR09201C0 |  | GA-P1 ; Metal Studs (TR RM) | 11d | 2011-05-16 A | 2011-10-04 | GP1S107807C0, GP1S207807C0, GP1PA09201C0 | 85% | 1.65d | 2011-06-25 | 2011-07-09 | 71.8d | 0d | PARTITIONS [58 h]; PARTITIONS - Metal Studs [5 m]; Cost |  |  | 0 | 0 | 0 | 0 | 313 | 885 | GP1TR09201C0 | 20 | 829.72 | 60 | 50 | GA | C | P1 | TR | PT | 092 | 01 | PP | B06 | S1 | 1F | R00 | CP | ACF06 | GP | 092 | PMS |  |  |  |  |  |  |
| GP1TR09203C0 |  | GA-P1 ; Partitions 1st face (TR RM) | 27d | 2011-06-12 A | 2011-10-19 | GP1TR09201C0 | 50% | 13.44d | 2011-06-12 | 2011-07-14 | 103.36d | 73.11d | PARTITIONS [5 m]; PARTITIONS [32 h]; Cost |  |  | 0 | 0 | 0 | 0 | 314 | 886 | GP1TR09203C0 |  | 290.4 | 15 | 5 | GA | C | P1 | TR | PT | 092 | 03 | PP | B06 | S1 | 2F | R00 | CP | ACF06 | GP | 092 | P1F |  |  |  |  |  |  |
| GP1TR26026C0 |  | GA-P1 ; 2nd Fix, Conduit (TR RM) | 60d | 2011-07-10 A | 2011-11-30 | GP1TR09201C0 | 25% | 45d | 2011-07-12 | 2011-09-22 | 71.8d | 0d | ELECTRICAL [451.2 h]; Cost [24536.7 AED] | 24,536.7 | 6,134.17 |  |  |  |  |  |  | GP1TR26026C0 |  |  | 25 | 15 | GA | C | P1 | TR | ME | 260 | 26 | PP | B06 | S1 | 2F | R00 | CP | ACF07 | MEP | 260 |  | 20 | 2n |  |  |  |  |
| GP1TR01005C0 |  | GA-P1 ; 2nd, Wall Inspection by Consultant (TR RM) | 0d | 2011-11-30 | 2011-11-30 | GP1TR26026C0 |  |  |  |  | 71.8d | 41.55d | Cost |  |  |  |  |  |  |  |  | GP1TR01005C0 |  |  |  |  | GA | C | P1 | TR | ME | 010 | 05 | PP | B06 | S1 | WI | R00 |  | ACF07 | MEP | 010 |  |  | 2n |  |  |  |  |
| GP1TR08101C0 |  | GA-P1 ; Door Frames (TR RM) | 24d | 2012-01-08 | 2012-02-05 | GP1TR09201C0, GNHE08101C0 FS+137d |  |  |  |  | 59.25d | 29d | ASSORTED DOORS [3 h]; Cost |  |  |  |  |  |  | 316 | 20001090 | GP1TR08101C0 |  |  |  |  | GA | C | P1 | TR | DO | 081 | 01 | PP | B06 | S1 | DF | R00 |  | ACF06 |  | 081 |  |  |  | 08 |  |  |  |
| GP1TR09205C0 |  | GA-P1 ; Partitions Closing (TR RM) | 42d | 2012-01-21 | 2012-03-10 | GAFOA09208C1 FF, GP1CO04407C10 FF, GP1TR01005C0, GP1TR09201C0, GP1TR09203C0, GP1TR08101C0 FF, GP1PA09205C0 SS |  |  |  |  | 30.25d | 0d | PARTITIONS [5 m]; PARTITIONS [54 h]; Cost |  |  |  |  |  |  | 315 | 887 | GP1TR09205C0 |  |  |  |  | GA | C | P1 | TR | PT | 092 | 05 | PP | B06 | S1 | FF | R00 |  | ACF06 | GP | 092 | P2F |  |  |  |  |  |  |
| GP1TR09901C0 |  | GA-P1 ; Wall Prime & 1st coat (TR RM) | 18d | 2012-03-11 | 2012-03-31 | GP1CO04003C0, GP1TR09205C0 |  |  |  |  | 30.25d | 0d | WALL PAINT [4 h]; WALL PAINT [4 m2]; Cost |  |  |  |  |  |  | 360 | 20001110 | GP1TR09901C0 |  |  |  |  | GA | C | P1 | TR | PA | 099 | 01 | PP | B06 | S1 | 01 | R00 |  | ACF06 |  | 099 |  |  |  |  |  |  |  |
| GP1TR23009C0 |  | GA-P1 ; 2nd Fix, Inst of VAV'S CHW connection (TR RM) | 30d | 2012-03-11 | 2012-04-14 | GP1TR09205C0 |  |  |  |  | 90.25d | 0d | MECHANICAL [788.4 h]; Cost |  |  |  |  |  |  |  |  | GP1TR23009C0 |  |  |  |  | GA | C | P1 | TR | ME | 230 | 09 | PP | B06 | S1 | 2F | R00 |  | ACF07 | MEP | 230 |  | 25 | 2n |  |  |  |  |
| GP1TR23011C0 |  | GA-P1 ; 2nd Fix, Inst of VCD's/FD's (TR RM) | 30d | 2012-03-11 | 2012-04-14 | GP1TR09205C0 |  |  |  |  | 90.25d | 0d | MECHANICAL [673.2 h]; Cost |  |  |  |  |  |  |  |  | GP1TR23011C0 |  |  |  |  | GA | C | P1 | TR | ME | 230 | 11 | PP | B06 | S1 | 2F | R00 |  | ACF07 | MEP | 230 |  | 25 | 2n |  |  |  |  |
| GP1TR26007C0 |  | GA-P1 ; 2nd Fix, Cable Pulling (TR RM) | 30d | 2012-03-11 | 2012-04-14 | GP1TR09203C0, GP1TR26026C0, GP1TR09205C0 |  |  |  |  | 120.25d | 90d | ELECTRICAL [1117.2 h]; Cost |  |  |  |  |  |  |  |  | GP1TR26007C0 |  |  |  |  | GA | C | P1 | TR | ME | 260 | 07 | PP | B06 | S1 | 2F | R00 |  | ACF07 | MEP | 260 |  | 20 | 2n |  |  |  |  |
| GP1TR26009C0 |  | GA-P1 ; 2nd Fix, Inst of Equipment (DB, TR, SG,BUS) (TR RM) | 30d | 2012-03-11 | 2012-04-14 | GP1TR09205C0 |  |  |  |  | 90.25d | 60d | ELECTRICAL [946.8 h]; Cost |  |  |  |  |  |  |  |  | GP1TR26009C0 |  |  |  |  | GA | C | P1 | TR | ME | 260 | 09 | PP | B06 | S1 | 2F | R00 |  | ACF04 | MEP | 260 |  |  | 2n |  | E |  |  |
| GP1TR26027C0 |  | GA-P1 ; 2nd Fix, Wiring / Cabling (TR RM) | 30d | 2012-03-11 | 2012-04-14 | GP1TR26026C0, GP1TR09205C0 |  |  |  |  | 120.25d | 90d | ELECTRICAL [242.4 h]; Cost |  |  |  |  |  |  | 417 | 1318 | GP1TR26027C0 |  |  |  |  | GA | C | P1 | TR | ME | 260 | 27 | PP | B06 | S1 | 2F | R00 |  | ACF07 | MEP | 260 |  | 25 | 2n |  |  |  |  |
| GP1TR27002C0 |  | GA-P1 ; 2nd Fix, Dressing of ELV panels (TR RM) | 30d | 2012-03-11 | 2012-04-14 | GP1TR09205C0, GP1TR27020C0 SS |  |  |  |  | 105.25d | 75d | ELECTRICAL [79.2 h]; Cost |  |  |  |  |  |  |  |  | GP1TR27002C0 |  |  |  |  | GA | C | P1 | TR | ME | 270 | 02 | PP | B06 | S1 | 2F | R00 |  | ACF07 | MEP | 270 |  |  | 2n |  |  |  |  |
| GP1TR27020C0 |  | GA-P1 ; 2nd Fix, Inst of ELV Equipment (Panels) (TR RM) | 30d | 2012-03-11 | 2012-04-14 | GP1TR09205C0 |  |  |  |  | 105.25d | 0d | ELECTRICAL [1618.8 h]; Cost |  |  |  |  |  |  |  |  | GP1TR27020C0 |  |  |  |  | GA | C | P1 | TR | ME | 270 | 20 | PP | B06 | S1 | 2F | R00 |  | ACF04 | MEP | 270 |  |  | 2n |  | E |  |  |
| GP1TR09501C0 |  | GA-P1 ; Ceiling Grid and Service Tile (TR RM) | 24d | 2012-04-01 | 2012-04-28 | GP1TR09205C0 SS+15d, GP1TR09901C0 |  |  |  |  | 30.25d | 0d | CEILING GRID FOR GYPSUM [43.83 h]; CEILING GRID FOR GYPSUM [3.68 m2]; Cost |  |  |  |  |  |  | 336 | 1327 | GP1TR09501C0 |  |  |  |  | GA | C | P1 | TR | CE | 095 | 01 | PP | B06 | S1 | 01 | R00 |  | ACF06 |  | 095 |  |  |  |  |  | 1 |  |
| GP1TR09903C0 |  | GA-P1 ; Wall - Final Paint (TR RM) | 18d | 2012-04-01 | 2012-04-21 | GP1TR09901C0 |  |  |  |  | 156.25d | 126d | WALL PAINT [2 h]; WALL PAINT [2 m2]; Cost |  |  |  |  |  |  | 361 | 1312 | GP1TR09903C0 |  |  |  |  | GA | C | P1 | TR | PA | 099 | 03 | PP | B06 | S1 | 02 | R00 |  | ACF06 |  | 099 |  |  |  |  |  |  |  |
| GP1TR23013C0 |  | GA-P1 ; 2nd Fix, Insulation of CHW pipe & Duct (TR RM) | 30d | 2012-04-15 | 2012-05-19 | GP1TR23009C0, GP1TR23011C0 |  |  |  |  | 90.25d | 60d | MECHANICAL [1699.2 h]; Cost |  |  |  |  |  |  |  |  | GP1TR23013C0 |  |  |  |  | GA | C | P1 | TR | ME | 230 | 13 | PP | B06 | S1 | 2F | R00 |  | ACF07 | MEP | 230 |  |  | 2n |  |  |  |  |
| GP1TR09601C0 |  | GA-P1 ; Floor Finishes (TR RM) | 18d | 2012-04-29 | 2012-05-19 | GP1TR09501C0 |  |  |  |  | 60.25d | 0d | ASSORTED FLOOR FINISH [336 h]; ASSORTED FLOOR FINISH [186 m2]; Cost |  |  |  |  |  |  | 359 | 20001120 | GP1TR09601C0 |  |  |  |  | GA | C | P1 | TR | FF | 096 | 01 | PP | B06 | S1 | 01 | R00 |  | ACF06 |  | FF |  |  |  |  |  |  |  |
| GP1TR09905C0 |  | GA-P1 ; Ceiling Prime & 1st coat (TR RM) | 18d | 2012-04-29 | 2012-05-19 | GP1TR09501C0 |  |  |  |  | 120.25d | 72d | CEILING PAINT [7 h]; CEILING PAINT [8 m2]; Cost |  |  |  |  |  |  | 362 | 1313 | GP1TR09905C0 |  |  |  |  | GA | C | P1 | TR | PA | 099 | 05 | PP | B06 | S1 | 01 | R00 |  | ACF06 |  | 099 |  |  |  |  |  |  |  |
| GP1TR23003C0 |  | GA-P1 ; Final Fix, Inst of Grilles & Diffusers (TR RM) | 30d | 2012-04-29 | 2012-06-02 | GP1TR23074C0 SS, GP1TR09501C0 |  |  |  |  | 30.25d | 0d | MECHANICAL [1030.8 h]; Cost |  |  |  |  |  |  |  |  | GP1TR23003C0 |  |  |  |  | GA | C | P1 | TR | ME | 230 | 03 | PP | B06 | S1 | FF | R00 |  | ACF07 | MEP | 230 |  |  | FF |  |  |  |  |
| GP1TR23023C0 |  | GA-P1 ; 2nd Fix, Flexible ducts (TR RM) | 42d | 2012-04-29 | 2012-06-17 | GP1TR09205C0, GP1TR09501C0 |  |  |  |  | 66.25d | 36d | MECHANICAL [1962 h]; Cost |  |  |  |  |  |  | 412 | 20001140 | GP1TR23023C0 |  |  |  |  | GA | C | P1 | TR | ME | 230 | 23 | PP | B06 | S1 | 2F | R00 |  | ACF07 | MEP | 230 |  |  | 2n |  |  |  |  |
| GP1TR23074C0 |  | GA-P1 ; Final Fix, Grilles, panels & diffusers (TR RM) | 30d | 2012-04-29 | 2012-06-02 | GP1TR09501C0 |  |  |  |  | 30.25d | 0d | MECHANICAL [1030.8 h]; Cost |  |  |  |  |  |  | 419 | 20001160 | GP1TR23074C0 |  |  |  |  | GA | C | P1 | TR | ME | 230 | 74 | PP | B06 | S1 | FF | R00 |  | ACF07 | MEP | 230 |  |  | FF |  |  |  |  |
| GP1TR26005C0 |  | GA-P1 ; 2nd Fix, Wiring for Power/Lighting/Emergency (TR RM) | 30d | 2012-04-29 | 2012-06-02 | GP1TR26026C0, GP1TR09501C0 |  |  |  |  | 78.25d | 48d | ELECTRICAL [242.4 h]; Cost |  |  |  |  |  |  |  |  | GP1TR26005C0 |  |  |  |  | GA | C | P1 | TR | ME | 260 | 05 | PP | B06 | S1 | 2F | R00 |  | ACF07 | MEP | 260 |  | 25 | 2n |  |  |  |  |
| GP1TR26015C0 |  | GA-P1 ; Final Fix, Inst of Ceiling rose (TR RM) | 18d | 2012-04-29 | 2012-05-19 | GP1TR09501C0 |  |  |  |  | 57.25d | 0d | ELECTRICAL [34.8 h]; Cost |  |  |  |  |  |  |  |  | GP1TR26015C0 |  |  |  |  | GA | C | P1 | TR | ME | 260 | 15 | PP | B06 | S1 | FF | R00 |  | ACF07 | MEP | 260 |  |  | FF |  |  |  |  |
| GP1TR08105C0 |  | GA-P1 ; Doors (TR RM) | 24d | 2012-05-20 | 2012-06-17 | GP1TR08101C0, GP1TR09901C0, OGNMU00059S0, OGNMU00065S0, GP1TR09601C0 |  |  |  |  | 93.25d | 0d | ASSORTED DOORS [10 h]; ASSORTED DOORS [1 no]; Cost |  |  |  |  |  |  | 317 | 1325 | GP1TR08105C0 |  |  |  |  | GA | C | P1 | TR | DO | 081 | 05 | PP | B06 | S1 | DR | R00 |  | ACF06 |  | 081 |  |  |  | 08 |  |  |  |
| GP1TR21115C0 |  | GA-P1 ; 2nd Fix, Gaseous Fire Suppression (TR RM) | 30d | 2012-05-20 | 2012-06-24 | GP1TR09601C0 |  |  |  |  | 60.25d | 30d | MECHANICAL [626.4 h]; Cost |  |  |  |  |  |  | 411 | 20001130 | GP1TR21115C0 |  |  |  |  | GA | C | P1 | TR | ME | 211 | 15 | PP | B06 | S1 | 2F | R00 |  | ACF07 | MEP | 211 |  |  | 2n |  |  |  |  |
| GP1TR26019C0 |  | GA-P1 ; Final Fix, Inst of Light fittings (TR RM) | 18d | 2012-05-20 | 2012-06-09 | GP1TR26015C0, GP1TR09501C0 |  |  |  |  | 57.25d | 27d | ELECTRICAL [7791.6 h]; Cost |  |  |  |  |  |  |  |  | GP1TR26019C0 |  |  |  |  | GA | C | P1 | TR | ME | 260 | 19 | PP | B06 | S1 | FF | R00 |  | ACF07 | MEP | 260 |  |  | FF |  |  |  |  |
| GP1TR26076C0 |  | GA-P1 ; Final Fix, Lighting fittings (TR RM) | 18d | 2012-06-03 | 2012-06-24 | GP1TR23003C0, GP1TR09501C0 |  |  |  |  | 30.25d | 0d | ELECTRICAL [7791.6 h]; Cost |  |  |  |  |  |  | 420 | 20001170 | GP1TR26076C0 |  |  |  |  | GA | C | P1 | TR | ME | 260 | 76 | PP | B06 | S1 | FF | R00 |  | ACF07 | MEP | 260 |  |  | FF |  |  |  |  |
| GP1TR08709C0 |  | GA-P1 ; Ironmongery (TR RM) | 15d | 2012-06-18 | 2012-07-04 | GP1TR08105C0, OGNMU00059S0 |  |  |  |  | 93.25d | 63d | IRONMONGERY [10 h]; IRONMONGERY [1 no]; Cost |  |  |  |  |  |  | 322 | 20001100 | GP1TR08709C0 |  |  |  |  | GA | C | P1 | TR | DO | 087 | 09 | PP | B06 | S1 | IM | R00 |  | ACF06 |  | 087 |  |  |  | 08 |  |  |  |
| GP1TR26013C0 |  | GA-P1 ; Final Fix, Termination & Gladding of Cables (TR RM) | 15d | 2012-06-25 | 2012-07-11 | GP1TR26076C0, GP1TR26009C0 |  |  |  |  | 30.25d | 0d | ELECTRICAL [62.4 h]; Cost |  |  |  |  |  |  |  |  | GP1TR26013C0 |  |  |  |  | GA | C | P1 | TR | ME | 260 | 13 | PP | B06 | S1 | FF | R00 |  | ACF07 | MEP | 260 |  |  | FF |  |  |  |  |
| GP1TR27030C0 |  | GA-P1 ; Final Fix, Inst of ELV device (Detector/Speaker) (TR RM) | 15d | 2012-07-12 | 2012-07-29 | GP1TR26019C0, GP1TR26076C0, GP1TR26013C0, GP1TR27002C0 |  |  |  |  | 30.25d | 0d | ELECTRICAL [710.4 h]; Cost |  |  |  |  |  |  |  |  | GP1TR27030C0 |  |  |  |  | GA | C | P1 | TR | ME | 270 | 30 | PP | B06 | S1 | FF | R00 |  | ACF07 | MEP | 270 |  |  | FF |  |  |  |  |
| GP1TR01006C0 |  | GA-P1 ; 2nd, Ceiling Inspection by Consultants (TR RM) | 0d | 2012-07-30 | 2012-07-30 | GP1TR23009C0, GP1TR23011C0, GP1TR23013C0, GP1TR26007C0, GP1TR09501C0, GP1TR23003C0, GP1TR23074C0, GP1TR26015C0, GP1TR26019C0, GP1TR26076C0, GP1TR27030C0, GP1TR26013C0 |  |  |  |  | 30.25d | 0d | Cost |  |  |  |  |  |  |  |  | GP1TR01006C0 |  |  |  |  | GA | C | P1 | TR | ME | 010 | 06 | PP | B06 | S1 | CI | R00 |  | ACF07 | MEP | 010 |  |  | 2n |  |  |  |  |
| GP1TR09503C0 |  | GA-P1 ; Ceiling closure (TR RM) | 12d | 2012-07-30 | 2012-08-12 | GP1TR01006C0, GP1TR21115C0, GP1TR26005C0, GP1TR26007C0, GP1TR26026C0, GP1TR26027C0, GP1TR23023C0 |  |  |  |  | 30.25d | 0d | ASSORTED CEILING FINISH [24.6 h]; CEILING GYPSUM [1.23 h]; ASSORTED CEILING FINISH [40 m2]; CEILING GYPSUM [4 m2]; Cost |  |  |  |  |  |  | 337 | 20001080 | GP1TR09503C0 |  |  |  |  | GA | C | P1 | TR | CE | 095 | 03 | PP | B06 | S1 | 02 | R00 |  | ACF06 |  | 095 |  |  |  |  |  |  |  |
| GP1TR09907C0 |  | GA-P1 ; Ceiling - Final paint (TR RM) | 12d | 2012-08-13 | 2012-08-28 | GP1TR09905C0, GP1TR09503C0 |  |  |  |  | 48.25d | 18d | CEILING PAINT [4 h]; CEILING PAINT [4 m2]; Cost |  |  |  |  |  |  | 363 | 1314 | GP1TR09907C0 |  |  |  |  | GA | C | P1 | TR | PA | 099 | 07 | PP | B06 | S1 | 02 | R00 |  | ACF06 |  | 099 |  |  |  |  |  |  |  |
| GP1TR26017C0 |  | GA-P1 ; Final Fix, Inst of Switch/Sockets (TR RM) | 12d | 2012-08-13 | 2012-08-28 | GP1TR09901C0, GP1TR09503C0 |  |  |  |  | 30.25d | 0d | ELECTRICAL [132 h]; Cost |  |  |  |  |  |  |  |  | GP1TR26017C0 |  |  |  |  | GA | C | P1 | TR | ME | 260 | 17 | PP | B06 | S1 | FF | R00 |  | ACF07 | MEP | 260 |  |  | FF |  |  |  |  |
| GP1TR01802C0 |  | GA-P1 ; MEP de-snag, FIREM sign-off | 18d | 2012-08-29 | 2012-09-18 | GP1TR26017C0, GP1TR23074C0, GP1TR26015C0, GP1TR23003C0, GP1TR26019C0, GP1TR26076C0, GP1TR26013C0, GP1TR27030C0 |  |  |  |  | 30.25d | 0d | TESTING & COMMISSIONING [510 h]; Cost |  |  |  |  |  |  |  |  | S05CO01851C0 |  |  |  |  | GA | C | P1 | TR | SC | 018 | 53 | PP | B06 | S1 | 01 | R00 |  | ACF07 |  | 018 |  |  |  |  |  |  | BILL 6 |
| GP1TR01801C0 |  | GA-P1 ; Touch-up & Clean / JV inspection /CIR /De-snag | 22.75d | 2012-09-19 | 2012-10-15 | GP1TR08709C0, GP1TR09601C0, GP1TR09903C0, GP1TR09907C0, GP1TR01802C0, GP1TR09503C0 |  |  |  |  | 30.25d | 0d | TESTING & COMMISSIONING [128 h]; Cost |  |  |  |  |  |  | 396 |  | GP1TR01851C0 |  |  |  |  | GA | C | P1 | TR | SC | 018 | 51 | PP | B06 | S1 | 02 | R00 |  | ACF07 |  | 018 |  |  |  |  |  |  | BILL 6 |
| GP1TR01803C0 |  | GA-P1 ; Consultant's final de-snag inspection | 9d | 2012-10-15 | 2012-10-25 | GP1TR01801C0 |  |  |  |  | 30.25d | 0d | Labor General [1 h]; Cost |  |  |  |  |  |  |  |  | CP3TS01803C0 |  |  |  |  | GA | C | P1 | TR | SC | 018 | 03 | PP | B06 | S1 | 03 | R00 |  | ACF07 |  | 018 |  |  |  |  |  |  | BILL 6 |

| ID | WBS | Activity | Duration | Start | Finish | Predecessors | Complete | Remaining | Planned start | Planned finish | Total float | Free float | Resources | Cost | Actual cost | user_number8 | user_integer1 | user_integer2 | user_number7 | change id | RENZ % COMPLETE | July2011 Target% Complete | Claimed This Month | CCAD BUILDING(SET) | CCAD PHASE(SET) | CCAD FLOOR(SET) | CCAD ZONE(SET) | CCAD WORK(SET) | CCAD SECTION(SET) | CCAD SERIAL No.(SET) | CCAD SUB ZONE MEP(SET) | CCAD RESPONSIBILITY(SET) | CCAD BILL(SET) | CCAD HANDOVER(SET) | CCAD TAG(SET) | CCAD REV(SET) | CCADACF (SET) | CCAD CSA | CCAD SSCF | Change Order # | NEW ACTIVITY ID | CCAD DIVISION(SET) | CCAD MEQ |
| --- | --- | --- | --- | --- | --- | --- | --- | --- | --- | --- | --- | --- | --- | --- | --- | --- | --- | --- | --- | --- | --- | --- | --- | --- | --- | --- | --- | --- | --- | --- | --- | --- | --- | --- | --- | --- | --- | --- | --- | --- | --- | --- | --- |
|  | 03 | **Public Area ( Elev.Lobby & Corridors )** |  | 2011-04-11 | 2013-01-29 |  |  |  |  |  |  |  |  |  |  |  |  |  |  |  |  |  |  |  |  |  |  |  |  |  |  |  |  |  |  |  |  |  |  |  |  |  |  |
| GP1PA21111C0 |  | GA-P1 ; 1st Fix, Inst of Sprinkler main pipe (Public Area) | 168d | 2011-04-11 A | 2011-12-24 | GP1PA22005C0 SS+12d, GP1PA23001C0 | 85% | 25.2d | 2011-07-30 | 2012-02-21 | 28.5d | 0d | MECHANICAL [926.4 h]; Cost [29558 AED] | 29,557.99 | 25,124.29 | 0 | 0 | 0 | 0 | S08PA21111C0 | 35 | 98 | 14869.75 | GA | C | P1 | PA | ME | 211 | 11 | 1S | PP | B06 | S1 | 1F | R00 | ACF04 | MEP | 211 |  |  |  |  |
| GP1PA23001C0 |  | GA-P1 ; 1st Fix, Inst. of Supports for MEP (Public Area) | 200d | 2011-04-11 A | 2011-10-23 | GP1S107807C0, GP1S207807C0 | 90% | 20d | 2011-05-02 | 2011-12-31 | 28.5d | 0d | MECHANICAL [2642.4 h]; Cost [28834.6 AED] | 28,834.58 | 25,951.13 |  |  |  |  | S08PA23001C0 | 100 |  |  | GA | C | P1 | PA | ME | 230 | 01 | 1S |  | B06 | S1 | 1F | R00 | ACF04 | MEP | 230 |  |  |  |  |
| GP1PA22019C0 |  | GA-P1 ; 1st Fix, Inst of Drainage pipe (ceiling) (Public Area) | 66d | 2011-04-18 A | 2011-12-26 | GP1PA23001C0, GP1PA26013C0 SS+10d | 40% | 39.6d | 2011-07-07 | 2011-09-25 | 28.5d | 0d | PLUMBING [823.2 h]; Cost [35208.5 AED] | 35,208.51 | 14,083.41 | 0 | 0 | 0 | 0 | S08PA22019C0 | 15 | 75 |  | GA | C | P1 | PA | ME | 220 | 19 | 1S | PP | B06 | S1 | 1F | R00 | ACF04 | MEP | 220 |  |  |  |  |
| GP1PA23017C0 |  | GA-P1 ; 1st Fix, Inst of CHW pipe (Public Area) | 60d | 2011-05-15 A | 2012-01-16 | GP1PA21111C0 SS+12d, GP1PA23001C0 | 25% | 45d | 2011-08-06 | 2011-10-16 | 28.5d | 0d | MECHANICAL [3248.4 h]; Cost [90112.2 AED] | 90,112.24 | 22,528.06 | 0 | 0 | 0 | 0 | S08PA23017C0 | 10 | 65 |  | GA | C | P1 | PA | ME | 230 | 17 | 1S | PP | B06 | S1 | 1F | R00 | ACF04 | MEP | 230 |  |  |  |  |
| GP1PA09201C0 |  | GA-P1 ; Metal Studs (Public Area) | 12d | 2011-05-21 A | 2011-10-02 | GP1PA23001C0 SS+12d | 85% | 1.8d | 2011-06-11 | 2011-06-25 | 64.45d | 0d | PARTITIONS [1 h]; PARTITIONS - Metal Studs [112 m]; Cost |  |  |  |  |  |  | S08PA09201C0 | 10 |  | 31114.79 | GA | C | P1 | PA | PT | 092 | 01 |  | PP | B06 | S1 | 1F | R00 | ACF06 | GP | 092 | 313 | 944 |  |  |
| GP1PA09203C0 |  | GA-P1 ; Partitions early wall & 1st face (Public Area) | 32d | 2011-06-04 A | 2011-10-20 | GP1PA09201C0 | 50% | 16d | 2011-06-04 | 2011-07-11 | 102.45d | 72.2d | PARTITIONS [112 m]; PARTITIONS [951 h]; Cost |  |  | 0 | 0 | 0 | 0 | S08PA09203C0 |  |  | 14520.23 | GA | C | P1 | PA | PT | 092 | 03 |  | PP | B06 | S1 | 2F | R00 | ACF06 | GP | 092 | 314 | 945 |  |  |
| GP1PA08103C0 |  | GA-P1 ; Door Frames (Public Area) | 36d | 2011-06-12 A | 2012-02-15 | GP1PA09201C0, GNHE08101C0 FS+137d | 10% | 32.4d | 2011-06-12 | 2011-07-25 | 44.85d | 14.6d | ASSORTED DOORS [79 h]; Cost |  |  |  |  |  |  | S08PA08103C0 |  |  | 1367.38 | GA | C | P1 | PA | DO | 081 | 03 |  | PP | B06 | S1 | DF | R00 | ACF06 |  | 081 | 316 | 947 | 08 |  |
| GP1PA21117C0 |  | GA-P1 ; 1st Fix, Inst of Sprinkler branch pipe (Public Area) | 168d | 2011-07-10 A | 2012-01-23 | GP1PA09201C0, GP1PA21111C0 | 85% | 25.2d | 2011-09-19 | 2012-04-10 | 125.1d | 96.6d | MECHANICAL [931.2 h]; Cost [50874.3 AED] | 50,874.31 | 43,243.17 | 0 | 0 | 0 | 0 | S08PA21117C0 |  | 90 | 26540.23 | GA | C | P1 | PA | ME | 211 | 17 | 1S | PP | B06 | S1 | 1F | R00 | ACF04 | MEP | 211 |  |  |  |  |
| GP1PA26001C0 |  | GA-P1 ; 1st Fix, Inst of Trunking/Conduiting (Public Area) | 78d | 2011-07-10 A | 2011-12-05 | GP1PA23001C0, GP1S107807C0, GP1S207807C0 | 60% | 31.2d | 2011-06-30 | 2011-10-01 | 28.5d | 0d | ELECTRICAL [1474.8 h]; Cost [24536.7 AED] | 24,536.7 | 14,722.02 | 0 | 0 | 0 | 0 | S08PA26001C0 |  | 90 |  | GA | C | P1 | PA | ME | 260 | 01 | 1S | PP | B06 | S1 | 1F | R00 | ACF04 | MEP | 260 |  |  |  |  |
| GP1PA26013C0 |  | GA-P1 ; 1st Fix, Inst of Cable Tray (Public Area) | 66d | 2011-07-10 A | 2012-01-04 | GP1PA23001C0, GP1PA27010C0 SS+10d, GP1S107807C0, GP1S207807C0 | 30% | 46.2d | 2011-07-26 | 2011-10-12 | 28.5d | 0d | ELECTRICAL [2011.2 h]; Cost [13923.6 AED] | 13,923.6 | 4,177.08 | 0 | 0 | 0 | 0 | S08PA26013C0 |  | 60 | 78934.9 | GA | C | P1 | PA | ME | 260 | 13 | 1S | PP | B06 | S1 | 1F | R00 | ACF04 | MEP | 260 |  |  |  |  |
| GP1PA23008C0 |  | GA-P1 ; 1st Fix, Inst of VCD's/FD's (Public Area) | 54d | 2011-09-05 A | 2012-03-25 | GP1PA23023C0 | 10% | 48.6d | 2011-12-07 | 2012-02-11 | 72.9d | 44.4d | MECHANICAL [673.2 h]; Cost [36751.3 AED] | 36,751.29 | 3,675.13 |  |  |  |  | S08PA23008C0 |  | 50 |  | GA | C | P1 | PA | ME | 230 | 08 | 1S | PP | B06 | S1 | 1F | R00 | ACF04 | MEP | 230 |  |  |  |  |
| GP1PA26009C0 |  | GA-P1 ; 2nd Fix, Inst of Wall conduites (Public Area) | 48d | 2011-09-05 A | 2011-12-04 | GP1PA09201C0 FS+6d | 10% | 43.2d | 2011-09-20 | 2011-11-19 | 69.25d | 4.8d | ELECTRICAL [451.2 h]; Cost [24536.7 AED] | 24,536.7 | 2,453.67 |  |  |  |  | S08PA26009C0 |  | 45 |  | GA | C | P1 | PA | ME | 260 | 09 | 2n | PP | B06 | S1 | 2F | R00 | ACF07 | MEP | 260 |  |  |  |  |
| GP1PA22011C0 |  | GA-P1 ; 2nd Fix, Drainage/Water pipe (wall) (Public Area) | 48d | 2011-10-09 | 2011-12-10 | GP1PA09201C0 FS+6d |  |  |  |  | 64.45d | 0d | PLUMBING [644.4 h]; Cost |  |  |  |  |  |  | S08PA22011C0 |  | 25 |  | GA | C | P1 | PA | ME | 220 | 11 | 2n | PP | B06 | S1 | 2F | R00 | ACF07 | MEP | 220 |  |  |  |  |
| GP1PA27010C0 |  | GA-P1 ; 1st Fix, Inst of Trunking for ELV system (Public Area) | 54d | 2011-10-24 | 2011-12-31 | GP1PA23001C0, GP1PA26001C0 SS+12d, GP1S107807C0, GP1S207807C0 |  |  |  |  | 28.5d | 0d | ELECTRICAL [1467.6 h]; Cost |  |  |  |  |  |  | S08PA27010C0 |  | 90 |  | GA | C | P1 | PA | ME | 270 | 10 | 1S | PP | B06 | S1 | 1F | R00 | ACF04 | MEP | 270 |  |  |  |  |
| GP1PA22005C0 |  | GA-P1 ; 1st Fix, Inst of Water supply pipe (ceiling) (Public Area) | 54d | 2011-11-05 | 2012-01-12 | GP1PA22019C0 SS+7d, GP1PA23001C0 |  |  |  |  | 28.5d | 0d | PLUMBING [500.4 h]; Cost |  |  |  |  |  |  | S08PA22005C0 |  | 45 |  | GA | C | P1 | PA | ME | 220 | 05 | 1S | PP | B06 | S1 | 1F | R00 | ACF04 | MEP | 220 |  |  |  |  |
| GP1PA23023C0 |  | GA-P1 ; 1st Fix, Inst of Main Ducting (Public Area) | 54d | 2011-11-22 | 2012-01-26 | GP1PA23001C0, GP1PA23017C0 SS+7d |  |  |  |  | 67.5d | 0d | MECHANICAL [7458 h]; Cost |  |  |  |  |  |  | S08PA23023C0 |  | 50 |  | GA | C | P1 | PA | ME | 230 | 23 | 1S | PP | B06 | S1 | 1F | R00 | ACF04 | MEP | 230 |  |  |  |  |
| GP1PA01005C0 |  | GA-P1 ; 2nd, Wall Inspection by Consultant (Public Area) | 0d | 2011-12-10 | 2011-12-10 | GP1PA22011C0, GP1PA26009C0 |  |  |  |  | 64.45d | 34.2d | Cost |  |  |  |  |  |  | S08PA01005C0 |  |  |  | GA | C | P1 | PA | ME | 010 | 05 | 2n | PP | B06 | S1 | WI | R00 | ACF07 | MEP | 010 |  |  |  |  |
| GP1PA27001C0 |  | GA-P1 ; 1st Fix, Wiring/ Cabling work (Public Area) | 54d | 2012-01-04 | 2012-03-08 | GP1PA26001C0, GP1PA26013C0, GP1PA27010C0 |  |  |  |  | 87.3d | 58.8d | ELECTRICAL [242.4 h]; Cost |  |  |  |  |  |  | S08PA27001C0 |  | 45 | 7159.02 | GA | C | P1 | PA | ME | 270 | 01 | 1S | PP | B06 | S1 | 1F | R00 | ACF04 | MEP | 270 |  |  |  |  |
| GP1PA23009C0 |  | GA-P1 ; 2nd Fix, Inst of VAV'S CHW connection (Public Area) | 48d | 2012-01-17 | 2012-03-13 | GP1PA23017C0 |  |  |  |  | 28.5d | 0d | MECHANICAL [788.4 h]; Cost |  |  |  |  |  |  | S08PA23009C0 |  | 45 |  | GA | C | P1 | PA | ME | 230 | 09 | 2n | PP | B06 | S1 | 2F | R00 | ACF07 | MEP | 230 |  |  |  |  |
| GP1PA09205C0 |  | GA-P1 ; Partitions Closing (Public Area) | 36d | 2012-01-21 | 2012-03-03 | GP1PA01005C0, GP1PA09203C0, GP1PA22005C0, GP1PA22019C0, GAFOA09208C1 FF, GP1CO04407C10 FF, GAFCI22001R02 FS+65d, GP1PA08103C0 FF |  |  |  |  | 30.25d | 0d | PARTITIONS [112 m]; PARTITIONS [1230 h]; Cost |  |  |  |  |  |  | S08PA09205C0 |  |  |  | GA | C | P1 | PA | PT | 092 | 05 |  | PP | B06 | S1 | FF | R00 | ACF06 | GP | 092 | 315 | 946 |  |  |
| GP1PA07101C0 |  | GA-P1 ; Waterproofing (TLT) (Public Area) | 18d | 2012-03-04 | 2012-03-24 | GP1PA09205C0 |  |  |  |  | 160.5d | 108.88d | THERMAL & MOISTURE [232 h]; THERMAL & MOISTURE [1501 m2]; Cost |  |  |  |  |  |  | S08PA09201C0 |  |  |  | GA | C | P1 | PA | FF | 071 | 01 |  | PP | B06 | S1 | 01 | R00 | ACF03 |  | 071 | 313 | 944 |  |  |
| GP1PA09901C0 |  | GA-P1 ; Wall Prime & 1st coat (Public Area) | 36d | 2012-03-04 | 2012-04-14 | GP1PA09205C0 |  |  |  |  | 55.5d | 0d | WALL PAINT [82 h]; WALL PAINT [101 m2]; Cost |  |  |  |  |  |  | S08PA09901C0 |  |  |  | GA | C | P1 | PA | PA | 099 | 01 |  | PP | B06 | S1 | 01 | R00 | ACF06 |  | 099 | 328 | 956 |  |  |
| GP1PA26005C0 |  | GA-P1 ; 2nd Fix, Wiring for Power/Lighting/Emergency (Public Area) | 48d | 2012-03-04 | 2012-04-28 | GP1PA09205C0 |  |  |  |  | 145.5d | 0d | ELECTRICAL [242.4 h]; Cost |  |  |  |  |  |  | S08PA26005C0 |  |  |  | GA | C | P1 | PA | ME | 260 | 05 | 2n | PP | B06 | S1 | 2F | R00 | ACF07 | MEP | 260 |  |  |  |  |
| GP1PA26007C0 |  | GA-P1 ; 2nd Fix, Cable Pulling (Public Area) | 48d | 2012-03-04 | 2012-04-28 | GP1PA09201C0 SS+6d, GP1PA09205C0 |  |  |  |  | 175.5d | 147d | ELECTRICAL [1117.2 h]; Cost |  |  |  |  |  |  | S08PA26007C0 |  | 15 |  | GA | C | P1 | PA | ME | 260 | 07 | 2n | PP | B06 | S1 | 2F | R00 | ACF07 | MEP | 260 |  |  |  |  |
| GP1PA26011C0 |  | GA-P1 ; 2nd Fix, Inst of Equipment (DB) (Public Area) | 60d | 2012-03-04 | 2012-05-12 | GP1PA09205C0 |  |  |  |  | 109.5d | 51d | ELECTRICAL [524.4 h]; Cost |  |  |  |  |  |  | S08PA26011C0 |  |  |  | GA | C | P1 | PA | ME | 260 | 11 | 2n | PP | B06 | S1 | 2F | R00 | ACF04 | MEP | 260 |  |  |  | E |
| GP1PA26053C0 |  | GA-P1 ; 2nd Fix, Wiring / Cabling (Public Area) | 48d | 2012-03-04 | 2012-04-28 | GP1PA09205C0 |  |  |  |  | 175.5d | 147d | ELECTRICAL [242.4 h]; Cost |  |  |  |  |  |  | S08PA26053C0 |  |  |  | GA | C | P1 | PA | ME | 260 | 53 | 2n | PP | B06 | S1 | 2F | R00 | ACF07 | MEP | 260 | 389 | 977 |  |  |
| GP1PA09601C0 |  | GA-P1 ; Flooring (stone) (Public Area) | 120d | 2012-03-11 | 2012-07-30 | GP1PA07101C0 FF, GP1PA09205C0, GAFCI22002R02 FS+72d, GP1CO04404C0 SS+24d, GP1PA05501C0 FF, A10410 |  |  |  |  | 51.62d | 0d | RUBBER FLOOR [16 h]; RUBBER FLOOR [38 m2]; Cost |  |  |  |  |  |  | S08PA09601C0 |  |  |  | GA | C | P1 | PA | FF | 096 | 01 |  | PP | B06 | S1 | 03 | R00 | ACF06 |  | ST | 326 | 955 |  |  |
| GP1PA23015C0 |  | GA-P1 ; 2nd Fix, Insulation of CHW pipe & Duct (Public Area) | 54d | 2012-03-14 | 2012-05-15 | GP1PA23009C0, GP1PA23017C0, GP1PA23023C0 |  |  |  |  | 28.5d | 0d | MECHANICAL [1699.2 h]; Cost |  |  |  |  |  |  | S08PA23015C0 |  | 50 |  | GA | C | P1 | PA | ME | 230 | 15 | 2n | PP | B06 | S1 | 2F | R00 | ACF07 | MEP | 230 |  |  |  |  |
| GP1PA05501C0 |  | GA-P1 ; Handrails & balustrade (Public Area) | 36d | 2012-04-15 | 2012-05-26 | GP1PA09901C0, GAFT1805509C0, GAFT1405509C0, GAFT1905509C0, GAFT1705509C0, GAFT2005509C0 |  |  |  |  | 106.5d | 54.88d | SECONDARY STEEL [4147 h]; Cost |  |  |  |  |  |  | S08PA05501C0 |  |  |  | GA | C | P1 | PA | SW | 055 | 01 |  | PP | B06 | S1 | 01 | R00 | ACF03 |  | a |  |  |  |  |
| GP1PA26015C0 |  | GA-P1 ; Final Fix, Termination & Gladding of Cables (Public Area) | 30d | 2012-04-29 | 2012-06-02 | GP1PA26005C0 |  |  |  |  | 145.5d | 117d | ELECTRICAL [62.4 h]; Cost |  |  |  |  |  |  | S08PA26015C0 |  |  |  | GA | C | P1 | PA | ME | 260 | 15 | FF | PP | B06 | S1 | FF | R00 | ACF07 | MEP | 260 |  |  |  |  |
| GP1PA09501C0 |  | GA-P1 ; Ceiling Grid (Public Area) | 42d | 2012-05-16 | 2012-07-04 | GP1PA09205C0 SS+15d, GP1PA21117C0, GP1PA23008C0, GP1PA23009C0, GP1PA23015C0, GP1PA27001C0, GAFCI22002R02 FS+72d, GP1PA09901C0 |  |  |  |  | 28.5d | 0d | CEILING GRID FOR GYPSUM [3267.77 h]; CEILING GRID FOR GYPSUM [279.51 m2]; Cost |  |  |  |  |  |  | S08PA09501C0 |  |  |  | GA | C | P1 | PA | CE | 095 | 01 |  | PP | B06 | S1 | 01 | R00 | ACF06 |  | 095 | 323 | 952 |  |  |
| GP1PA09905C0 |  | GA-P1 ; Ceiling Prime & 1st coat (Public Area) | 36d | 2012-07-05 | 2012-08-15 | GP1PA09501C0 |  |  |  |  | 112.5d | 84d | CEILING PAINT [497 h]; CEILING PAINT [619 m2]; Cost |  |  |  |  |  |  | S08PA09905C0 |  |  |  | GA | C | P1 | PA | PA | 099 | 05 |  | PP | B06 | S1 | 01 | R00 | ACF06 |  | 099 | 330 | 958 |  |  |
| GP1PA21115C0 |  | GA-P1 ; 2nd Fix, Inst of Sprinkler droppers (Public Area) | 48d | 2012-07-05 | 2012-09-01 | GP1PA09501C0 |  |  |  |  | 40.5d | 0d | MECHANICAL [1734 h]; Cost |  |  |  |  |  |  | S08PA21115C0 |  |  |  | GA | C | P1 | PA | ME | 211 | 15 | 2n | PP | B06 | S1 | 2F | R00 | ACF07 | MEP | 211 |  |  |  |  |
| GP1PA23021C0 |  | GA-P1 ; 2nd Fix, Inst of Flexible Duct & Plenum boxes (Public Area) | 54d | 2012-07-05 | 2012-09-08 | GP1PA09205C0, GP1PA09501C0 |  |  |  |  | 28.5d | 0d | MECHANICAL [1962 h]; Cost |  |  |  |  |  |  | S08PA23021C0 |  |  |  | GA | C | P1 | PA | ME | 230 | 21 | 2n | PP | B06 | S1 | 2F | R00 | ACF07 | MEP | 230 |  |  |  |  |
| GP1PA26017C0 |  | GA-P1 ; Final Fix, Inst of Ceiling rose (Public Area) | 30d | 2012-07-05 | 2012-08-08 | GP1PA09501C0 |  |  |  |  | 40.5d | 0d | ELECTRICAL [34.8 h]; Cost |  |  |  |  |  |  | S08PA26017C0 |  |  |  | GA | C | P1 | PA | ME | 260 | 17 | FF | PP | B06 | S1 | FF | R00 | ACF07 | MEP | 260 |  |  |  |  |
| GP1PA27002C0 |  | GA-P1 ; 2nd Fix, Wiring Droppers (Public Area) | 48d | 2012-07-05 | 2012-09-01 | GP1PA09501C0 |  |  |  |  | 40.5d | 0d | ELECTRICAL [242.4 h]; Cost |  |  |  |  |  |  | S08PA27002C0 |  |  |  | GA | C | P1 | PA | ME | 270 | 02 | 2n | PP | B06 | S1 | 2F | R00 | ACF07 | MEP | 270 |  |  |  |  |
| GP1PA27020C0 |  | GA-P1 ; 2nd Fix, Inst of ELV Equipment (Panels) (Public Area) | 60d | 2012-07-05 | 2012-09-15 | GP1PA09205C0, GP1PA09501C0 |  |  |  |  | 58.5d | 0d | ELECTRICAL [1618.8 h]; Cost |  |  |  |  |  |  | S08PA27020C0 |  |  |  | GA | C | P1 | PA | ME | 270 | 20 | 2n | PP | B06 | S1 | 2F | R00 | ACF04 | MEP | 270 |  |  |  | E |
| GP1PA09701C0 |  | GA-P1 ; Wall finishes (ST, WD, WC) (Public Area) | 54d | 2012-07-12 | 2012-09-15 | GP1PA26011C0, GP1PA27020C0 FF, GAFCI22002R02 FS+170d, GP1CO04404C0 |  |  |  |  | 58.5d | 0d | ASSORTED WALL FINISH [256 h]; ASSORTED WALL FINISH [294 m2]; Cost |  |  |  |  |  |  | S08PA09701C0 |  |  |  | GA | C | P1 | PA | WF | 097 | 01 |  | PP | B06 | S1 | 01 | R00 | ACF06 |  | 097 | 105 | 1002 |  |  |
| GP1PA08107C0 |  | GA-P1 ; Doors (Public Area) | 36d | 2012-07-30 | 2012-09-12 | GP1PA08103C0, GP1PA09901C0, GP1PA09601C0 |  |  |  |  | 108.62d | 0d | ASSORTED DOORS [120 h]; ASSORTED DOORS [12 no]; Cost |  |  |  |  |  |  | S08PA08107C0 |  |  |  | GA | C | P1 | PA | DO | 081 | 07 |  | PP | B06 | S1 | DR | R00 | ACF06 |  | 081 | 317 | 948 | 08 |  |
| GP1PA11002C0 |  | GA-P1 ; Millwork / Furniture (Public Area) | 60d | 2012-07-30 | 2012-10-10 | GP1PA09601C0 |  |  |  |  | 102.62d | 74.12d | FF&E [269 h]; FF&E [143.11 no]; Cost |  |  |  |  |  |  | S08PA09201C0 |  |  |  | GA | C | P1 | PA | WO | 110 | 02 |  | PP | B06 | S1 | 10 | R00 | ACF08 |  | f | 313 | 944 |  |  |
| GP1PA26003C0 |  | GA-P1 ; Final Fix, Inst of Light fittings (Public Area) | 48d | 2012-08-09 | 2012-10-06 | GP1PA09501C0, GP1PA26017C0 |  |  |  |  | 40.5d | 12d | ELECTRICAL [7791.6 h]; Cost |  |  |  |  |  |  | S08PA26003C0 |  |  |  | GA | C | P1 | PA | ME | 260 | 03 | FF | PP | B06 | S1 | FF | R00 | ACF07 | MEP | 260 |  |  |  |  |
| GP1PA21113C0 |  | GA-P1 ; Final Fix, Inst of Sprinklers head/ Extinguisher (Public Area) | 30d | 2012-09-02 | 2012-10-06 | GP1PA09501C0, GP1PA21115C0 |  |  |  |  | 40.5d | 12d | MECHANICAL [297.6 h]; Cost |  |  |  |  |  |  | S08PA21113C0 |  |  |  | GA | C | P1 | PA | ME | 211 | 13 | FF | PP | B06 | S1 | FF | R00 | ACF07 | MEP | 211 |  |  |  |  |
| GP1PA27030C0 |  | GA-P1 ; Final Fix, Inst of ELV devise (Detector/Speaker) (Public Area) | 30d | 2012-09-02 | 2012-10-06 | GP1PA09501C0, GP1PA27002C0 |  |  |  |  | 40.5d | 12d | ELECTRICAL [710.4 h]; Cost |  |  |  |  |  |  | S08PA27030C0 |  |  |  | GA | C | P1 | PA | ME | 270 | 30 | FF | PP | B06 | S1 | FF | R00 | ACF07 | MEP | 270 |  |  |  |  |
| GP1PA23019C0 |  | GA-P1 ; Final Fix, Inst of Grilles & Diffusers (Public Area) | 36d | 2012-09-09 | 2012-10-20 | GP1PA09501C0, GP1PA23021C0 |  |  |  |  | 28.5d | 0d | MECHANICAL [1030.8 h]; Cost |  |  |  |  |  |  | S08PA23019C0 |  |  |  | GA | C | P1 | PA | ME | 230 | 19 | FF | PP | B06 | S1 | FF | R00 | ACF07 | MEP | 230 |  |  |  |  |
| GP1PA08709C0 |  | GA-P1 ; Ironmongery (Public Area) | 18d | 2012-09-12 | 2012-10-03 | GP1PA08107C0 |  |  |  |  | 108.62d | 80.12d | IRONMONGERY [80 h]; IRONMONGERY [8 no]; Cost |  |  |  |  |  |  | S08PA08709C0 |  |  |  | GA | C | P1 | PA | DO | 087 | 09 |  | PP | B06 | S1 | IM | R00 | ACF06 |  | 087 | 322 | 951 | 08 |  |
| GP1PA11009C0 |  | GA-P1 ; Signage (Public Area) | 14d | 2012-09-16 | 2012-10-01 | GP1PA09701C0 |  |  |  |  | 110.5d | 82d | SIGNAGES [16 h]; SIGNAGES [15.86 no]; Cost |  |  |  |  |  |  | S08PA11009C0 |  |  |  | GA | C | P1 | PA | SA | 110 | 09 |  | PP | B06 | S1 | 09 | R00 | ACF08 |  | c | 322 | 951 | 08 |  |
| GP1PA01006C0 |  | GA-P1 ; 2nd, Ceiling Inspection by Consultants (Public Area) | 0d | 2012-10-21 | 2012-10-21 | GP1PA21115C0, GP1PA23009C0, GP1PA23015C0, GP1PA27002C0, GP1PA09501C0, GP1PA21113C0, GP1PA23019C0, GP1PA26003C0, GP1PA26017C0, GP1PA27030C0, GP1PA26015C0 |  |  |  |  | 28.5d | 0d | Cost |  |  |  |  |  |  | S08PA01006C0 |  |  |  | GA | C | P1 | PA | ME | 010 | 06 | 2n | PP | B06 | S1 | CI | R00 | ACF07 | MEP | 010 |  |  |  |  |
| GP1PA09503C0 |  | GA-P1 ; Ceiling closure - ACT/Gypsum (Public Area) | 30d | 2012-10-21 | 2012-11-27 | GP1PA01006C0, GP1PA21115C0, GP1PA26005C0, GP1PA27001C0, GP1PA27002C0, GAFOA09507C1, GP1PA09701C0, GP1PA23021C0, GP1PA26053C0, GP1PA26007C0 |  |  |  |  | 28.5d | 0d | ASSORTED CEILING FINISH [1847.46 h]; CEILING GYPSUM [91.64 h]; ASSORTED CEILING FINISH [3004 m2]; CEILING GYPSUM [280 m2]; Cost |  |  |  |  |  |  | S08PA09503C0 |  |  |  | GA | C | P1 | PA | CE | 095 | 03 |  | PP | B06 | S1 | 02 | R00 | ACF06 |  | 095 | 324 | 953 |  |  |
| GP1PA09903C0 |  | GA-P1 ; Wall Final Paint (Public Area) | 36d | 2012-11-28 | 2013-01-10 | GP1PA09503C0, GP1PA09901C0, GP1PA09905C0 |  |  |  |  | 28.5d | 0d | WALL PAINT [44 h]; WALL PAINT [54 m2]; Cost |  |  |  |  |  |  | S08PA09903C0 |  |  |  | GA | C | P1 | PA | PA | 099 | 03 |  | PP | B06 | S1 | 02 | R00 | ACF06 |  | 099 | 329 | 957 |  |  |
| GP1PA09907C0 |  | GA-P1 ; Ceiling Final paint (Public Area) | 18d | 2012-11-28 | 2012-12-19 | GP1PA09905C0, GP1PA09503C0 |  |  |  |  | 46.5d | 18d | CEILING PAINT [268 h]; CEILING PAINT [333 m2]; Cost |  |  |  |  |  |  | S08PA09907C0 |  |  |  | GA | C | P1 | PA | PA | 099 | 07 |  | PP | B06 | S1 | 02 | R00 | ACF06 |  | 099 | 331 | 959 |  |  |
| GP1PA26019C0 |  | GA-P1 ; Final Fix, Inst of Switch/Sockets (Public Area) | 18d | 2012-11-28 | 2012-12-19 | GP1PA09901C0, GP1PA09503C0 |  |  |  |  | 36.5d | 0d | ELECTRICAL [132 h]; Cost |  |  |  |  |  |  | S08PA26019C0 |  |  |  | GA | C | P1 | PA | ME | 260 | 19 | FF | PP | B06 | S1 | FF | R00 | ACF07 | MEP | 260 |  |  |  |  |

| ID | WBS | Activity | Duration | Start | Finish | Predecessors | Complete | Remaining | Planned start | Planned finish | Total float | Free float | Resources | Cost | Actual cost | change id | CCAD BUILDING(SET) | CCAD PHASE(SET) | CCAD FLOOR(SET) | CCAD ZONE(SET) | CCAD WORK(SET) | CCAD SECTION(SET) | CCAD SERIAL No.(SET) | CCAD RESPONSIBILITY(SET) | CCAD CBS(SET) | CCAD BILL(SET) | CCAD HANDOVER(SET) | CCAD TAG(SET) | CCAD REV(SET) | CCADACF (SET) | CCAD SSCF | RENZ % COMPLETE | CCAD SUB ZONE MEP(SET) | CCAD (VO) | CCAD CSA | Act Selector % | user_number8 | user_integer1 | user_integer2 | user_number7 | Change Order # | NEW ACTIVITY ID | Claimed This Month | P_811 | P_711 | July2011 Target% Complete | CCAD DIVISION(SET) | CCAD MEQ | TO BE DELETED |
| --- | --- | --- | --- | --- | --- | --- | --- | --- | --- | --- | --- | --- | --- | --- | --- | --- | --- | --- | --- | --- | --- | --- | --- | --- | --- | --- | --- | --- | --- | --- | --- | --- | --- | --- | --- | --- | --- | --- | --- | --- | --- | --- | --- | --- | --- | --- | --- | --- | --- |
|  | 10 | **Precommissioning Tesing & snagging (Public Area)** |  | 2012-12-20 | 2013-01-29 |  |  |  |  |  |  |  |  |  |  |  |  |  |  |  |  |  |  |  |  |  |  |  |  |  |  |  |  |  |  |  |  |  |  |  |  |  |  |  |  |  |  |  |  |
| GP1TS01801C0 |  | GA-P1 ; MEP de-snag, FIREM sign-off | 10d | 2012-12-20 | 2012-12-31 | GVT0914341C0, GVT0714341C0, GP1PA26015C0, GP1PA21113C0, GP1PA23019C0, GP1PA26017C0, GP1PA26003C0, GP1PA27030C0, GP1PA26019C0, GP1PA09503C0 |  |  |  |  | 36.5d | 8d | TESTING & COMMISSIONING [2040 h]; Cost |  |  | GP1TS01801C0 | GA | C | P1 | TS | SC | 018 | 01 | PP | BILL 6 | B06 | S1 | 01 | R00 | ACF07 | 018 |  |  |  |  |  |  |  |  |  |  |  |  |  |  |  |  |  |  |
| GP1TS01805C0 |  | GA-P1 ; Touch-up & Clean / JV inspection /CIR /De-snag | 14.5d | 2013-01-12 | 2013-01-29 | GP1CO04401C0, GP1TS01801C0, GAFT2005509C0, GP1PA08709C0, GP1PA09601C0, GP1PA09701C0, GP1PA09903C0, GP1PA09907C0, GP1PA11002C0, GP1PA11009C0, GP1PA05501C0, GP1RG09672C1 |  |  |  |  | 28.5d | 0d | TESTING & COMMISSIONING [128 h]; Cost |  |  | GP1TS01802C0 | GA | C | P1 | TS | SC | 018 | 02 | PP | BILL 6 | B06 | S1 | 02 | R00 | ACF07 | 018 |  |  |  |  |  |  |  |  |  |  |  |  |  |  |  |  |  |  |
| GP1TS01807C0 |  | GA-P1 ; Consultant's final de-snag inspection | 0d | 2013-01-29 | 2013-01-29 | GP1TS01805C0 |  |  |  |  | 28.5d | 0.5d | Cost |  |  | GP1TS01803C0 | GA | C | P1 | TS | SC | 018 | 03 | PP | BILL 6 | B06 | S1 | 03 | R00 | ACF07 | 018 |  |  |  |  |  |  |  |  |  |  |  |  |  |  |  |  |  |  |
|  | 04 | **Recept , Gen Wait** |  | 2011-04-27 | 2013-01-06 |  |  |  |  |  |  |  |  |  |  |  |  |  |  |  |  |  |  |  |  |  |  |  |  |  |  |  |  |  |  |  |  |  |  |  |  |  |  |  |  |  |  |  |  |
| GP1RG23001C0 |  | GA-P1 ; 1st Fix, Inst. of Supports for MEP (Recept ,Gen Wait) | 168d | 2011-04-27 A | 2011-11-12 | GP1CO04003C0, GP1S107807C0, GP1S207807C0 | 80% | 33.6d | 2011-06-27 | 2012-01-19 | 47.9d | 0d | MECHANICAL [511.2 h]; Cost [28834.6 AED] | 28,834.58 | 23,067.67 | S08PA23001C0 | GA | C | P1 | RG | ME | 230 | 01 |  |  | B06 | S1 | 1F | R00 | ACF04 | 230 | 100 | 1S | CP | MEP | M1F |  |  |  |  |  |  |  |  |  |  |  |  |  |
| GP1RG09201C0 |  | GA-P1 ; Metal Studs (Recept ,Gen Wait) | 36d | 2011-06-06 A | 2011-11-17 | GP1RG23001C0, GP1PA09201C0 | 85% | 5.4d | 2011-07-23 | 2011-09-05 | 55.5d | 0d | PARTITIONS [3609 h]; PARTITIONS - Metal Studs [333 m]; Cost |  |  | S08PA09201C0 | GA | C | P1 | RG | PT | 092 | 01 | PP |  | B06 | S1 | 1F | R00 | ACF06 | 092 |  |  | CP | GP | PMS | 0 | 0 | 0 | 0 | 313 | 944 | 61399.84 | 60 | 50 |  |  |  |  |
| GP1RG21111C0 |  | GA-P1 ; 1st Fix, Inst of Sprinkler main pipe (Recept ,Gen Wait) | 200d | 2011-07-10 A | 2011-12-06 | GP1RG22005C0 SS+9d, GP1RG23001C0 | 95% | 10d | 2011-09-07 | 2012-05-06 | 47.9d | 0d | MECHANICAL [876 h]; Cost [29558 AED] | 29,557.99 | 28,080.09 | S08PA21111C0 | GA | C | P1 | RG | ME | 211 | 11 | PP |  | B06 | S1 | 1F | R00 | ACF04 | 211 |  | 1S | CP | MEP | M1F |  |  |  |  |  |  |  |  |  | 98 |  |  |  |
| GP1RG21117C0 |  | GA-P1 ; 1st Fix, Inst of Sprinkler branch pipe (Recept ,Gen Wait) | 192d | 2011-07-10 A | 2012-01-10 | GP1RG09201C0, GP1RG21111C0 | 85% | 28.8d | 2011-10-23 | 2012-06-11 | 127.1d | 71.6d | MECHANICAL [931.2 h]; Cost [50874.3 AED] | 50,874.31 | 43,243.17 | S08PA21117C0 | GA | C | P1 | RG | ME | 211 | 17 | PP |  | B06 | S1 | 1F | R00 | ACF04 | 211 |  | 1S | CP | MEP | M1F | 0 | 0 | 0 | 0 |  |  |  | 85 | 60 | 90 |  |  |  |
| GP1RG26001C0 |  | GA-P1 ; 1st Fix, Inst of Trunking/Conduiting (Recept ,Gen Wait) | 156d | 2011-07-10 A | 2011-11-17 | GP1RG23001C0 SS, GP1S107807C0, GP1S207807C0 | 75% | 39d | 2011-07-11 | 2012-01-18 | 121.5d | 33.6d | ELECTRICAL [451.2 h]; Cost [24536.7 AED] | 24,536.7 | 18,402.52 | S08PA26001C0 | GA | C | P1 | RG | ME | 260 | 01 | PP |  | B06 | S1 | 1F | R00 | ACF04 | 260 |  | 1S | CP | MEP | M1F |  |  |  |  |  |  | 22138.33 | 75 | 20 | 75 |  |  |  |
| GP1RG26013C0 |  | GA-P1 ; 1st Fix, Inst of Cable Tray (Recept ,Gen Wait) | 66d | 2011-07-10 A | 2012-01-12 | GP1RG23001C0, GP1S107807C0, GP1S207807C0 | 25% | 49.5d | 2011-08-06 | 2011-10-24 | 47.9d | 0d | ELECTRICAL [244.8 h]; Cost [13923.6 AED] | 13,923.6 | 3,480.9 | S08PA26013C0 | GA | C | P1 | RG | ME | 260 | 13 | PP |  | B06 | S1 | 1F | R00 | ACF04 | 260 |  | 1S | CP | MEP | M1F | 0 | 0 | 0 | 0 |  |  | 7187.77 |  |  | 45 |  |  |  |
| GP1RG09203C0 |  | GA-P1 ; Partitions 1st face (Recept ,Gen Wait) | 45d | 2011-08-03 A | 2011-12-17 | GP1RG09201C0 | 50% | 22.5d | 2011-08-11 | 2011-10-05 | 99d | 43.5d | PARTITIONS [333 m]; PARTITIONS [2821 h]; Cost |  |  | S08PA09203C0 | GA | C | P1 | RG | PT | 092 | 03 | PP |  | B06 | S1 | 2F | R00 | ACF06 | 092 |  |  | CP | GP | P1F | 0 | 0 | 0 | 0 | 314 | 945 |  | 15 | 0 |  |  |  |  |
| GP1RG23023C0 |  | GA-P1 ; 1st Fix, Inst of Main Ducting (Recept ,Gen Wait) | 54d | 2011-08-07 A | 2011-11-30 | GP1RG23001C0 SS | 10% | 48.6d | 2011-09-20 | 2011-11-27 | 111.9d | 0d | MECHANICAL [7458 h]; Cost [407301 AED] | 407,300.87 | 61,095.13 | S08PA23023C0 | GA | C | P1 | RG | ME | 230 | 23 | PP |  | B06 | S1 | 1F | R00 | ACF04 | 230 |  | 1S | CP | MEP | M1F | 0 | 0 | 0 | 0 |  |  |  | 5 | 0 | 50 |  |  |  |
| GP1RG22019C0 |  | GA-P1 ; 1st Fix, Inst of Drainage pipe (ceiling) (Recept ,Gen Wait) | 54d | 2011-09-05 A | 2012-01-11 | GP1RG23001C0, GP1RG26013C0 SS+10d | 10% | 48.6d | 2011-10-10 | 2011-12-18 | 47.9d | 0d | PLUMBING [644.4 h]; Cost [35208.5 AED] | 35,208.51 | 3,520.85 | S08PA22019C0 | GA | C | P1 | RG | ME | 220 | 19 | PP |  | B06 | S1 | 1F | R00 | ACF04 | 220 |  | 1S |  | MEP | M1F |  |  |  |  |  |  | 2041.75 |  |  | 90 |  |  |  |
| GP1RG22005C0 |  | GA-P1 ; 1st Fix, Inst of Water supply pipe (ceiling) (Recept ,Gen Wait) | 54d | 2011-11-12 | 2012-01-17 | GP1RG22019C0 SS+7d, GP1RG23001C0 |  |  |  |  | 47.9d | 0d | PLUMBING [500.4 h]; Cost |  |  | S08PA22005C0 | GA | C | P1 | RG | ME | 220 | 05 | PP |  | B06 | S1 | 1F | R00 | ACF04 | 220 |  | 1S |  | MEP | M1F |  |  |  |  |  |  |  |  |  | 75 |  |  |  |
| GP1RG27010C0 |  | GA-P1 ; 1st Fix, Inst of Trunking for ELV system (Recept ,Gen Wait) | 54d | 2011-11-12 | 2012-01-17 | GP1RG23001C0, GP1RG26001C0 SS+12d, GP1S107807C0, GP1S207807C0 |  |  |  |  | 104.9d | 0d | ELECTRICAL [597.6 h]; Cost |  |  | S08PA27010C0 | GA | C | P1 | RG | ME | 270 | 10 | PP |  | B06 | S1 | 1F | R00 | ACF04 | 270 |  | 1S |  | MEP | M1F |  |  |  |  |  |  | 30211.1 |  |  | 80 |  |  |  |
| GP1RG05502C0 |  | GA-P1 ; Staircase Frame (ST-16) installation (Recept ,Gen Wait) | 24d | 2011-11-19 | 2011-12-18 | GP1RG09201C0 |  |  |  |  | 55.5d | 0d | SECONDARY STEEL [195 h]; STRUCTURAL STEEL [10 T(Fe)]; Cost |  |  | S08PA09201C0 | GA | C | P1 | RG | SW | 055 | 02 | PP |  | B06 | S1 | 01 | R00 | ACF03 | 055 |  |  |  | MEP |  |  |  |  |  | 313 | 944 |  |  |  |  |  |  |  |
| GP1RG22011C0 |  | GA-P1 ; 2nd Fix, Drainage/Water pipe (wall) (Recept ,Gen Wait) | 48d | 2011-11-19 | 2012-01-16 | GP1RG09201C0 |  |  |  |  | 73.5d | 18d | PLUMBING [644.4 h]; Cost |  |  | S08PA22011C0 | GA | C | P1 | RG | ME | 220 | 11 | PP |  | B06 | S1 | 2F | R00 | ACF07 | 220 |  | 2n |  | MEP |  |  |  |  |  |  |  |  |  |  | 25 |  |  |  |
| GP1RG26009C0 |  | GA-P1 ; 2nd Fix, Inst of Wall conduites (Recept ,Gen Wait) | 48d | 2011-11-19 | 2012-01-16 | GP1RG09201C0 |  |  |  |  | 73.5d | 18d | ELECTRICAL [451.2 h]; Cost |  |  | S08PA26009C0 | GA | C | P1 | RG | ME | 260 | 09 | PP |  | B06 | S1 | 2F | R00 | ACF07 | 260 |  | 2n |  | MEP |  |  |  |  |  |  |  | 7379.44 |  |  | 25 |  |  |  |
| GP1RG23017C0 |  | GA-P1 ; 1st Fix, Inst of CHW pipe (Recept ,Gen Wait) | 54d | 2011-11-22 | 2012-01-28 | GP1RG21111C0 SS+9d, GP1RG23001C0 |  |  |  |  | 47.9d | 0d | MECHANICAL [1650 h]; Cost |  |  | S08PA23017C0 | GA | C | P1 | RG | ME | 230 | 17 | PP |  | B06 | S1 | 1F | R00 | ACF04 | 230 |  | 1S |  | MEP | M1F |  |  |  |  |  |  |  |  |  | 45 |  |  |  |
| GP1RG23008C0 |  | GA-P1 ; 1st Fix, Inst of VCD's/FD's (Recept ,Gen Wait) | 54d | 2011-11-30 | 2012-02-05 | GP1RG23023C0 |  |  |  |  | 143.9d | 96d | MECHANICAL [673.2 h]; Cost |  |  | S08PA23008C0 | GA | C | P1 | RG | ME | 230 | 08 | PP |  | B06 | S1 | 1F | R00 | ACF04 | 230 |  | 1S |  | MEP | M1F |  |  |  |  |  |  |  |  |  |  |  |  |  |
| GP1RG05503C0 |  | GA-P1 ; Staircase Tread (ST-16) installation (Recept ,Gen Wait) | 18d | 2011-12-19 | 2012-01-09 | GP1RG05502C0 |  |  |  |  | 55.5d | 0d | SECONDARY STEEL [39 h]; Cost |  |  | S08PA09201C0 | GA | C | P1 | RG | SW | 055 | 03 | PP |  | B06 | S1 | 01 | R00 | ACF03 | 055 |  |  |  | MEP |  |  |  |  |  | 313 | 944 |  |  |  |  |  |  |  |
| GP1RG08103C0 |  | GA-P1 ; Door Frames (Recept ,Gen Wait) | 36d | 2012-01-08 | 2012-02-19 | GP1RG09201C0 SS+14d, GNHE08101C0 FS+137d |  |  |  |  | 93.5d | 38d | ASSORTED DOORS [234 h]; Cost |  |  | S08PA08103C0 | GA | C | P1 | RG | DO | 081 | 03 | PP |  | B06 | S1 | DF | R00 | ACF06 | 081 |  |  |  |  |  |  |  |  |  | 316 | 947 |  |  |  |  | 08 |  |  |
| GP1RG05504C0 |  | GA-P1 ; Staircase Glass (ST-16) installation (Recept ,Gen Wait) | 24d | 2012-01-10 | 2012-02-07 | GP1RG05503C0 |  |  |  |  | 55.5d | 0d | SECONDARY STEEL [224 h]; Cost |  |  | S08PA09201C0 | GA | C | P1 | RG | SW | 055 | 04 | PP |  | B06 | S1 | 01 | R00 | ACF03 | 055 |  |  |  | MEP |  |  |  |  |  | 313 | 944 |  |  |  |  |  |  |  |
| GP1RG27001C0 |  | GA-P1 ; 1st Fix, Wiring/ Cabling work (Recept ,Gen Wait) | 54d | 2012-01-17 | 2012-03-21 | GP1RG26001C0, GP1RG26013C0, GP1RG27010C0 |  |  |  |  | 104.9d | 57d | ELECTRICAL [242.4 h]; Cost |  |  | S08PA27001C0 | GA | C | P1 | RG | ME | 270 | 01 | PP |  | B06 | S1 | 1F | R00 | ACF04 | 270 |  | 1S |  | MEP | M1F |  |  |  |  |  |  |  |  |  | 25 |  |  |  |
| GP1RG23009C0 |  | GA-P1 ; 2nd Fix, Inst of VAV'S CHW connection (Recept ,Gen Wait) | 48d | 2012-01-28 | 2012-03-25 | GP1RG23017C0 |  |  |  |  | 47.9d | 0d | MECHANICAL [788.4 h]; Cost |  |  | S08PA23009C0 | GA | C | P1 | RG | ME | 230 | 09 | PP |  | B06 | S1 | 2F | R00 | ACF07 | 230 |  | 2n |  | MEP |  |  |  |  |  |  |  |  |  |  | 45 |  |  |  |
| GP1RG01005C0 |  | GA-P1 ; 2nd, Wall Inspection by Consultant (Recept ,Gen Wait) | 0d | 2012-02-08 | 2012-02-08 | GP1RG05504C0 FF, GP1RG22011C0, GP1RG26009C0 |  |  |  |  | 55.5d | 0d | Cost |  |  | S08PA01005C0 | GA | C | P1 | RG | ME | 010 | 05 | PP |  | B06 | S1 | WI | R00 | ACF07 | 010 |  | 2n |  | MEP |  |  |  |  |  |  |  |  |  |  |  |  |  |  |
| GP1RG09205C0 |  | GA-P1 ; Partitions Closing (Recept ,Gen Wait) | 48d | 2012-02-08 | 2012-04-03 | GAFOA09208C1 FF, GP1CO04407C10 FF, GP1RG01005C0, GP1RG09203C0, GP1RG22005C0, GP1RG22019C0, GP1RG08103C0 FF, GP1RG21117C0 FF, GP1RG23023C0, GP1RG26001C0 |  |  |  |  | 55.5d | 0d | PARTITIONS [333 m]; PARTITIONS [3635 h]; Cost |  |  | S08PA09205C0 | GA | C | P1 | RG | PT | 092 | 05 | PP |  | B06 | S1 | FF | R00 | ACF06 | 092 |  |  |  | GP | P2F |  |  |  |  | 315 | 946 |  |  |  |  |  |  |  |
| GP1RG23015C0 |  | GA-P1 ; 2nd Fix, Insulation of CHW pipe & Duct (Recept ,Gen Wait) | 54d | 2012-03-25 | 2012-05-27 | GP1RG23009C0, GP1RG23017C0, GP1RG23023C0 |  |  |  |  | 47.9d | 0d | MECHANICAL [1699.2 h]; Cost |  |  | S08PA23015C0 | GA | C | P1 | RG | ME | 230 | 15 | PP |  | B06 | S1 | 2F | R00 | ACF07 | 230 |  | 2n |  | MEP |  |  |  |  |  |  |  |  |  |  |  |  |  |  |
| GP1RG09901C0 |  | GA-P1 ; Wall Prime & 1st coat (Recept ,Gen Wait) | 36d | 2012-04-04 | 2012-05-15 | GP1RG09205C0 |  |  |  |  | 57.5d | 0d | WALL PAINT [241 h]; WALL PAINT [299 m2]; Cost |  |  | S08PA09901C0 | GA | C | P1 | RG | PA | 099 | 01 | PP |  | B06 | S1 | 01 | R00 | ACF06 | 099 |  |  |  |  |  |  |  |  |  | 328 | 956 |  |  |  |  |  |  |  |
| GP1RG26005C0 |  | GA-P1 ; 2nd Fix, Wiring for Power/Lighting/Emergency (Recept ,Gen Wait) | 48d | 2012-04-04 | 2012-05-29 | GP1RG09205C0 |  |  |  |  | 135.5d | 0d | ELECTRICAL [242.4 h]; Cost |  |  | S08PA26005C0 | GA | C | P1 | RG | ME | 260 | 05 | PP |  | B06 | S1 | 2F | R00 | ACF07 | 260 |  | 2n |  | MEP |  |  |  |  |  |  |  |  |  |  |  |  |  |  |
| GP1RG26007C0 |  | GA-P1 ; 2nd Fix, Cable Pulling (Recept ,Gen Wait) | 48d | 2012-04-04 | 2012-05-29 | GP1RG09201C0 SS+6d, GP1RG09205C0 |  |  |  |  | 165.5d | 117.6d | ELECTRICAL [1117.2 h]; Cost |  |  | S08PA26007C0 | GA | C | P1 | RG | ME | 260 | 07 | PP |  | B06 | S1 | 2F | R00 | ACF07 | 260 |  | 2n |  | MEP |  |  |  |  |  |  |  | 33757.65 |  |  | 45 |  |  |  |
| GP1RG26011C0 |  | GA-P1 ; 2nd Fix, Inst of Equipment (DB) (Recept ,Gen Wait) | 60d | 2012-04-04 | 2012-06-12 | GP1RG09205C0 |  |  |  |  | 93.5d | 0d | ELECTRICAL [524.4 h]; Cost |  |  | S08PA26011C0 | GA | C | P1 | RG | ME | 260 | 11 | PP |  | B06 | S1 | 2F | R00 | ACF04 | 260 |  | 2n |  | MEP |  |  |  |  |  |  |  |  |  |  |  |  | E |  |
| GP1RG26053C0 |  | GA-P1 ; 2nd Fix, Wiring / Cabling (Recept ,Gen Wait) | 48d | 2012-04-04 | 2012-05-29 | GP1RG09203C0, GP1RG09205C0 |  |  |  |  | 165.5d | 117.6d | ELECTRICAL [242.4 h]; Cost |  |  | S08PA26053C0 | GA | C | P1 | RG | ME | 260 | 53 | PP |  | B06 | S1 | 2F | R00 | ACF07 | 260 |  | 2n |  | MEP |  |  |  |  |  | 389 | 977 |  |  |  |  |  |  |  |
| GP1RG27020C0 |  | GA-P1 ; 2nd Fix, Inst of ELV Equipment (Panels) (Recept ,Gen Wait) | 60d | 2012-04-04 | 2012-06-12 | GP1RG09205C0 |  |  |  |  | 93.5d | 0d | ELECTRICAL [1618.8 h]; Cost |  |  | S08PA27020C0 | GA | C | P1 | RG | ME | 270 | 20 | PP |  | B06 | S1 | 2F | R00 | ACF04 | 270 |  | 2n |  | MEP |  |  |  |  |  |  |  |  |  |  |  |  | E |  |
| GP1RG09601C0 |  | GA-P1 ; Flooring (Stone) (Recept ,Gen Wait) | 102d | 2012-04-10 | 2012-08-08 | GP1RG09205C0, GP1CO04404C0 SS+50d, GP1PA09601C0 SS+24d, A10410 |  |  |  |  | 49.62d | 0d | STONE FLOOR [231 m2]; STONE FLOOR [416 h]; Cost |  |  | S08PA09601C0 | GA | C | P1 | RG | FF | 096 | 01 | PP |  | B06 | S1 | 09 | R00 | ACF06 | ST |  |  |  |  |  |  |  |  |  | 326 | 955 |  |  |  |  |  |  | RENAME |
| GP1RG05501C0 |  | GA-P1 ; Handrails & balustrade (Recept ,Gen Wait) | 36d | 2012-05-16 | 2012-06-27 | GP1RG09901C0 |  |  |  |  | 190.5d | 142.6d | SECONDARY STEEL [1239 h]; Cost |  |  | S08PA05501C0 | GA | C | P1 | RG | SW | 055 | 01 | PP |  | B06 | S1 | 01 | R00 | ACF03 | a |  |  |  |  |  |  |  |  |  |  |  |  |  |  |  |  |  |  |
| GP1RG09501C0 |  | GA-P1 ; Ceiling Grid and Service Tile (Recept ,Gen Wait) | 30d | 2012-05-27 | 2012-07-02 | GP1RG09205C0 SS+15d, GP1RG21117C0, GP1RG23008C0, GP1RG23009C0, GP1RG23015C0, GP1RG27001C0, GP1RG09901C0 |  |  |  |  | 47.9d | 0d | CEILING GRID FOR GYPSUM [988.61 h]; CEILING GRID FOR GYPSUM [84.59 m2]; Cost |  |  | S08PA09501C0 | GA | C | P1 | RG | CE | 095 | 01 | PP |  | B06 | S1 | 01 | R00 | ACF06 | 095 |  |  |  |  |  |  |  |  |  | 323 | 952 |  |  |  |  |  |  |  |
| GP1RG26015C0 |  | GA-P1 ; Final Fix, Termination & Gladding of Cables (Recept ,Gen Wait) | 30d | 2012-05-30 | 2012-07-04 | GP1RG26005C0 |  |  |  |  | 135.5d | 87.6d | ELECTRICAL [62.4 h]; Cost |  |  | S08PA26015C0 | GA | C | P1 | RG | ME | 260 | 15 | PP |  | B06 | S1 | FF | R00 | ACF07 | 260 |  | FF |  | MEP |  |  |  |  |  |  |  |  |  |  |  |  |  |  |
| GP1RG09701C0 |  | GA-P1 ; Wall finishes (ST, WD, WC) (Recept ,Gen Wait) | 60d | 2012-06-13 | 2012-08-25 | GP1RG26011C0, GP1RG27020C0, GP1CO04404C0 |  |  |  |  | 93.5d | 0d | ASSORTED WALL FINISH [767 h]; ASSORTED WALL FINISH [882 m2]; Cost |  |  | S08PA09701C0 | GA | C | P1 | RG | WF | 097 | 01 | PP |  | B06 | S1 | 01 | R00 | ACF06 | 097 |  |  |  |  |  |  |  |  |  | 105 | 1002 |  |  |  |  |  |  |  |
| GP1RG09905C0 |  | GA-P1 ; Ceiling Prime & 1st coat (Recept ,Gen Wait) | 36d | 2012-07-02 | 2012-08-13 | GP1RG09501C0 |  |  |  |  | 90.9d | 0d | CEILING PAINT [151 h]; CEILING PAINT [187 m2]; Cost |  |  | S08PA09905C0 | GA | C | P1 | RG | PA | 099 | 05 | PP |  | B06 | S1 | 01 | R00 | ACF06 | 099 |  |  |  |  |  |  |  |  |  | 330 | 958 |  |  |  |  |  |  |  |
| GP1RG21115C0 |  | GA-P1 ; 2nd Fix, Inst of Sprinkler droppers (Recept ,Gen Wait) | 48d | 2012-07-02 | 2012-08-29 | GP1RG09501C0 |  |  |  |  | 59.9d | 0d | MECHANICAL [1734 h]; Cost |  |  | S08PA21115C0 | GA | C | P1 | RG | ME | 211 | 15 | PP |  | B06 | S1 | 2F | R00 | ACF07 | 211 |  | 2n |  | MEP |  |  |  |  |  |  |  |  |  |  |  |  |  |  |
| GP1RG23021C0 |  | GA-P1 ; 2nd Fix, Inst of Flexible Duct & Plenum boxes (Recept ,Gen Wait) | 54d | 2012-07-02 | 2012-09-05 | GP1RG09205C0, GP1RG09501C0 |  |  |  |  | 47.9d | 0d | MECHANICAL [1962 h]; Cost |  |  | S08PA23021C0 | GA | C | P1 | RG | ME | 230 | 21 | PP |  | B06 | S1 | 2F | R00 | ACF07 | 230 |  | 2n |  | MEP |  |  |  |  |  |  |  |  |  |  |  |  |  |  |
| GP1RG26017C0 |  | GA-P1 ; Final Fix, Inst of Ceiling rose (Recept ,Gen Wait) | 30d | 2012-07-02 | 2012-08-06 | GP1RG09501C0 |  |  |  |  | 59.9d | 0d | ELECTRICAL [34.8 h]; Cost |  |  | S08PA26017C0 | GA | C | P1 | RG | ME | 260 | 17 | PP |  | B06 | S1 | FF | R00 | ACF07 | 260 |  | FF |  | MEP |  |  |  |  |  |  |  |  |  |  |  |  |  |  |
| GP1RG27002C0 |  | GA-P1 ; 2nd Fix, Wiring Droppers (Recept ,Gen Wait) | 48d | 2012-07-02 | 2012-08-29 | GP1RG09501C0 |  |  |  |  | 59.9d | 0d | ELECTRICAL [242.4 h]; Cost |  |  | S08PA27002C0 | GA | C | P1 | RG | ME | 270 | 02 | PP |  | B06 | S1 | 2F | R00 | ACF07 | 270 |  | 2n |  | MEP |  |  |  |  |  |  |  |  |  |  |  |  |  |  |
| GP1RG26003C0 |  | GA-P1 ; Final Fix, Inst of Light fittings (Recept ,Gen Wait) | 48d | 2012-08-06 | 2012-10-03 | GP1RG09501C0, GP1RG26017C0 |  |  |  |  | 59.9d | 12d | ELECTRICAL [7791.6 h]; Cost |  |  | S08PA26003C0 | GA | C | P1 | RG | ME | 260 | 03 | PP |  | B06 | S1 | FF | R00 | ACF07 | 260 |  | FF |  | MEP |  |  |  |  |  |  |  |  |  |  |  |  |  |  |
| GP1RG08107C0 |  | GA-P1 ; Doors (Recept ,Gen Wait) | 36d | 2012-08-08 | 2012-09-22 | GP1RG08103C0, GP1RG09901C0, GP1RG09601C0 |  |  |  |  | 98.75d | 0d | ASSORTED DOORS [340 h]; ASSORTED DOORS [34 no]; Cost |  |  | S08PA08107C0 | GA | C | P1 | RG | DO | 081 | 07 | PP |  | B06 | S1 | DR | R00 | ACF06 | 081 |  |  |  |  |  |  |  |  |  | 317 | 948 |  |  |  |  | 08 |  |  |
| GP1RG09903C0 |  | GA-P1 ; Wall Final Paint (Recept ,Gen Wait) | 36d | 2012-08-13 | 2012-09-26 | GP1RG09901C0, GP1RG09905C0 |  |  |  |  | 114.9d | 67d | WALL PAINT [130 h]; WALL PAINT [161 m2]; Cost |  |  | S08PA09903C0 | GA | C | P1 | RG | PA | 099 | 03 | PP |  | B06 | S1 | 02 | R00 | ACF06 | 099 |  |  |  |  |  |  |  |  |  | 329 | 957 |  |  |  |  |  |  |  |
| GP1RG11002C0 |  | GA-P1 ; Millwork / Furniture (Recept ,Gen Wait) | 60d | 2012-08-13 | 2012-10-24 | GP1RG09905C0, GP1RG09601C0 |  |  |  |  | 90.9d | 43d | FF&E [269 h]; FF&E [143.11 no]; Cost |  |  | S08PA09201C0 | GA | C | P1 | RG | WO | 110 | 02 | PP |  | B06 | S1 | 10 | R00 | ACF08 | f |  |  |  |  |  |  |  |  |  | 313 | 944 |  |  |  |  |  |  |  |
| GP1RG11009C0 |  | GA-P1 ; Signage (Recept ,Gen Wait) | 12.5d | 2012-08-26 | 2012-09-09 | GP1RG09701C0 |  |  |  |  | 130d | 82.1d | SIGNAGES [48 h]; SIGNAGES [47.59 no]; Cost |  |  | S08PA11009C0 | GA | C | P1 | RG | SA | 110 | 09 | PP |  | B06 | S1 | 09 | R00 | ACF08 | c |  |  |  |  |  |  |  |  |  | 322 | 951 |  |  |  |  | 08 |  |  |
| GP1RG21113C0 |  | GA-P1 ; Final Fix, Inst of Sprinklers head/ Extinguisher (Recept ,Gen Wait) | 30d | 2012-08-29 | 2012-10-03 | GP1RG09501C0, GP1RG21115C0 |  |  |  |  | 59.9d | 12d | MECHANICAL [297.6 h]; Cost |  |  | S08PA21113C0 | GA | C | P1 | RG | ME | 211 | 13 | PP |  | B06 | S1 | FF | R00 | ACF07 | 211 |  | FF |  | MEP |  |  |  |  |  |  |  |  |  |  |  |  |  |  |
| GP1RG27030C0 |  | GA-P1 ; Final Fix, Inst of ELV devise (Detector/Speaker) (Recept ,Gen Wait) | 30d | 2012-08-29 | 2012-10-03 | GP1RG09501C0, GP1RG27002C0 |  |  |  |  | 59.9d | 12d | ELECTRICAL [710.4 h]; Cost |  |  | S08PA27030C0 | GA | C | P1 | RG | ME | 270 | 30 | PP |  | B06 | S1 | FF | R00 | ACF07 | 270 |  | FF |  | MEP |  |  |  |  |  |  |  |  |  |  |  |  |  |  |
| GP1RG23019C0 |  | GA-P1 ; Final Fix, Inst of Grilles & Diffusers (Recept ,Gen Wait) | 36d | 2012-09-05 | 2012-10-17 | GP1RG09501C0, GP1RG23021C0 |  |  |  |  | 47.9d | 0d | MECHANICAL [1030.8 h]; Cost |  |  | S08PA23019C0 | GA | C | P1 | RG | ME | 230 | 19 | PP |  | B06 | S1 | FF | R00 | ACF07 | 230 |  | FF |  | MEP |  |  |  |  |  |  |  |  |  |  |  |  |  |  |
| GP1RG08709C0 |  | GA-P1 ; Ironmongery (Recept ,Gen Wait) | 19.88d | 2012-09-22 | 2012-10-15 | GP1RG08107C0 |  |  |  |  | 98.75d | 50.85d | IRONMONGERY [240 h]; IRONMONGERY [24 no]; Cost |  |  | S08PA08709C0 | GA | C | P1 | RG | DO | 087 | 09 | PP |  | B06 | S1 | IM | R00 | ACF06 | 087 |  |  |  |  |  |  |  |  |  | 322 | 951 |  |  |  |  | 08 |  |  |
| GP1RG01006C0 |  | GA-P1 ; 2nd, Ceiling Inspection by Consultants (Recept ,Gen Wait) | 0d | 2012-10-17 | 2012-10-17 | GP1RG21115C0, GP1RG23009C0, GP1RG23015C0, GP1RG27002C0, GP1RG09501C0, GP1RG21113C0, GP1RG23019C0, GP1RG26003C0, GP1RG26017C0, GP1RG27030C0, GP1RG26015C0 |  |  |  |  | 47.9d | 0d | Cost |  |  | S08PA01006C0 | GA | C | P1 | RG | ME | 010 | 06 | PP |  | B06 | S1 | CI | R00 | ACF07 | 010 |  | 2n |  | MEP |  |  |  |  |  |  |  |  |  |  |  |  |  |  |
| GP1RG09503C0 |  | GA-P1 ; Ceiling closure - ACT/Gypsum (Recept ,Gen Wait) | 21d | 2012-10-17 | 2012-11-13 | GAFOA09507C1, GP1RG01006C0, GP1RG21115C0, GP1RG26005C0, GP1RG27001C0, GP1RG27002C0, GP1RG09701C0, GP1RG23021C0, GP1RG26053C0, GP1RG26007C0 |  |  |  |  | 47.9d | 0d | ASSORTED CEILING FINISH [559.03 h]; CEILING GYPSUM [27.68 h]; ASSORTED CEILING FINISH [909 m2]; CEILING GYPSUM [85 m2]; Cost |  |  | S08PA09503C0 | GA | C | P1 | RG | CE | 095 | 03 | PP |  | B06 | S1 | 02 | R00 | ACF06 | 095 |  |  |  |  |  |  |  |  |  | 324 | 953 |  |  |  |  |  |  |  |
| GP1RG09672C1 |  | GA-P1, Carpet Tile Finish (Conference, Prayer Room, Offices) | 0d | 2012-11-13 | 2012-11-13 | GP1RG09907C0 SS, GP1RG09903C0 SS |  |  |  |  | 75.9d | 47.4d | Cost |  |  |  | GA | C | P1 | RG | FF | 096 |  |  |  | B06 |  |  | R00 | ACF06 | CPT |  |  |  | CPT |  |  |  |  |  |  |  |  |  |  |  |  |  |  |
| GP1RG09907C0 |  | GA-P1 ; Ceiling Final paint (Recept ,Gen Wait) | 18d | 2012-11-13 | 2012-12-06 | GP1RG09601C0, GP1RG09905C0, GP1RG09503C0 |  |  |  |  | 57.9d | 0d | CEILING PAINT [82 h]; CEILING PAINT [101 m2]; Cost |  |  | S08PA09907C0 | GA | C | P1 | RG | PA | 099 | 07 | PP |  | B06 | S1 | 02 | R00 | ACF06 | 099 |  |  |  |  |  |  |  |  |  | 331 | 959 |  |  |  |  |  |  |  |
| GP1RG26019C0 |  | GA-P1 ; Final Fix, Inst of Switch/Sockets (Recept ,Gen Wait) | 18d | 2012-11-13 | 2012-12-06 | GP1RG09901C0, GP1RG09503C0 |  |  |  |  | 47.9d | 0d | ELECTRICAL [132 h]; Cost |  |  | S08PA26019C0 | GA | C | P1 | RG | ME | 260 | 19 | PP |  | B06 | S1 | FF | R00 | ACF07 | 260 |  | FF |  | MEP |  |  |  |  |  |  |  |  |  |  |  |  |  |  |

| ID | WBS | Activity | Type | Duration | Start | Finish | Predecessors | Complete | Remaining | Planned start | Planned finish | Total float | Free float | Resources | change id | CCAD BUILDING(SET) | CCAD PHASE(SET) | CCAD FLOOR(SET) | CCAD ZONE(SET) | CCAD WORK(SET) | CCAD SECTION(SET) | CCAD SERIAL No.(SET) | CCAD RESPONSIBILITY(SET) | CCAD CBS(SET) | CCAD BILL(SET) | CCAD HANDOVER(SET) | CCAD TAG(SET) | CCAD REV(SET) | CCADACF (SET) | CCAD SSCF | Actual Cost | RENZ % COMPLETE | Phase | Area/ Department | Grids | Are | Weight & Nos | Process | Levels | CCAD (VO) | CCAD CSA | user_number8 | user_integer1 | user_integer2 | user_number7 | Claimed This Month | P_811 | P_711 |
| --- | --- | --- | --- | --- | --- | --- | --- | --- | --- | --- | --- | --- | --- | --- | --- | --- | --- | --- | --- | --- | --- | --- | --- | --- | --- | --- | --- | --- | --- | --- | --- | --- | --- | --- | --- | --- | --- | --- | --- | --- | --- | --- | --- | --- | --- | --- | --- | --- |
|  | 10 | **Precommissioning Tesing & snagging (Recept , Gen Wait)** |  |  | 2012-12-06 | 2013-01-06 |  |  |  |  |  |  |  |  |  |  |  |  |  |  |  |  |  |  |  |  |  |  |  |  |  |  |  |  |  |  |  |  |  |  |  |  |  |  |  |  |  |  |
| GP1TS01804C0 |  | GA-P1 ; MEP de-snag, FIREM sign-off |  | 10d | 2012-12-06 | 2012-12-18 | GP1RG26015C0, GP1RG21113C0, GP1RG23019C0, GP1RG26017C0, GP1RG26003C0, GP1RG27030C0, GP1RG26019C0 |  |  |  |  | 47.9d | 0d | TESTING & COMMISSIONING [510 h]; Cost | GP1TS01801C0 | GA | C | P1 | TS | SC | 018 | 01 | PP | BILL 6 | B06 | S1 | 01 | R00 | ACF07 | 018 |  |  |  |  |  |  |  |  |  |  |  |  |  |  |  |  |  |  |
| GP1TS01806C0 |  | GA-P1 ; Touch-up & Clean / JV inspection /CIR /De-snag |  | 14.5d | 2012-12-18 | 2013-01-06 | GP1CO04401C0, GP1RG08709C0, GP1RG09601C0, GP1RG09701C0, GP1RG09903C0, GP1RG09907C0, GP1RG11009C0, GP1TS01804C0, GP1RG05501C0, GP1RG11002C0, GP1RG09503C0 |  |  |  |  | 47.9d | 0d | TESTING & COMMISSIONING [128 h]; Cost | GP1TS01802C0 | GA | C | P1 | TS | SC | 018 | 02 | PP | BILL 6 | B06 | S1 | 02 | R00 | ACF07 | 018 |  |  |  |  |  |  |  |  |  |  |  |  |  |  |  |  |  |  |
| GP1TS01808C0 |  | GA-P1 ; Consultant's final de-snag inspection |  | 0d | 2013-01-06 | 2013-01-06 | GP1TS01806C0 |  |  |  |  | 47.9d | 19.9d | Cost | GP1TS01803C0 | GA | C | P1 | TS | SC | 018 | 03 | PP | BILL 6 | B06 | S1 | 03 | R00 | ACF07 | 018 |  |  |  |  |  |  |  |  |  |  |  |  |  |  |  |  |  |  |
|  | GL | **Ground Level** |  |  | 2010-12-08 | 2013-01-30 |  |  |  |  |  |  |  |  |  |  |  |  |  |  |  |  |  |  |  |  |  |  |  |  |  |  |  |  |  |  |  |  |  |  |  |  |  |  |  |  |  |  |
|  | 01 | **Structure & Envelopment** |  |  | 2010-12-08 | 2012-11-17 |  |  |  |  |  |  |  |  |  |  |  |  |  |  |  |  |  |  |  |  |  |  |  |  |  |  |  |  |  |  |  |  |  |  |  |  |  |  |  |  |  |  |
| GGLS105101C0 |  | GA-GL ; Erection of Structural Steel of Ground FLR (Zone S1) |  | 12d | 2010-12-08 A | 2010-12-28 A | GP1S105103C0 | 100% |  | 2011-02-06 | 2011-02-20 |  |  | STRUCTURAL STEEL [5447 h]; STRUCTURAL STEEL [180 T(Fe)]; Cost | GGLS105101C0 | GA | C | GL | S1 | ST | 051 | 01 |  | BILL 6 | B06 | S1 | 01 | R00 | ACF03 | 051 | 1098379.19 | 100 | Z2 | GA | P12 | R | A6 | EREC | POD2 | CP | ST |  |  |  |  |  |  |  |
| GGLS105103C0 |  | GA-GL ; Alignment & welding of Ground FLR (Zone S1) |  | 5d | 2010-12-18 A | 2011-01-02 A | GGLS105101C0 | 100% |  | 2011-01-04 | 2011-01-10 |  |  | STRUCTURAL STEEL [921 h]; Cost | GGLS105103C0 | GA | C | GL | S1 | ST | 051 | 03 |  | BILL 6 | B06 | S1 | 02 | R00 | ACF03 | 051 | 122042.13 | 100 | Z2 | GA | P12 | R | A6 | EREC | POD2 |  | ST |  |  |  |  |  |  |  |
| GGLS205101C0 |  | GA-GL ; Erection of Structural Steel of Ground FLR (Zone S2) |  | 11.11d | 2011-01-08 A | 2011-03-12 A | GP1S205103C0 | 100% |  | 2011-01-30 | 2011-02-12 |  |  | STRUCTURAL STEEL [6371 h]; STRUCTURAL STEEL [210 T(Fe)]; Cost | GGLS205101C0 | GA | C | GL | S2 | ST | 051 | 01 |  | BILL 6 | B06 | S1 | 01 | R00 | ACF03 | 051 | 821864.15 | 100 | Z2 | GA | P12 | R | A6 | EREC | POD2 |  | ST |  |  |  |  |  |  |  |
| GGLS205103C0 |  | GA-GL ; Alignment & welding of Ground FLR (Zone S2) |  | 5d | 2011-01-15 A | 2011-03-18 A | GGLS205101C0 | 100% |  | 2011-02-13 | 2011-02-17 |  |  | STRUCTURAL STEEL [689 h]; Cost | GGLS205103C0 | GA | C | GL | S2 | ST | 051 | 03 |  | BILL 6 | B06 | S1 | 02 | R00 | ACF03 | 051 |  | 100 | Z2 | GA | P12 | R | A6 | EREC | POD2 |  | ST |  |  |  |  |  |  |  |
| GGLS105305C0 |  | GA-GL ; Metal Decking G FLR (Zone S1) |  | 12d | 2011-03-02 A | 2011-04-10 A | G01S105101C0, GGLS105103C0, GGLS205305C0 | 100% |  | 2011-03-21 | 2011-04-04 |  |  | METAL DECKING [684 h]; METAL DECKING [866 m2]; Cost | GGLS105305C0 | GA | C | GL | S1 | ST | 053 | 05 |  | BILL 6 | B06 | S1 | 03 | R00 | ACF03 | 053 |  | 100 | Z2 | GA | P12 | R | A6 | MDEC | POD2 |  | ST |  |  |  |  |  |  |  |
| GGLS205305C0 |  | GA-GL ; Metal Decking G FLR (Zone S2) |  | 12d | 2011-03-10 A | 2011-04-12 A | G01S205101C0, GGLS205103C0 | 100% |  | 2011-03-07 | 2011-03-21 |  |  | METAL DECKING [512 h]; METAL DECKING [648 m2]; Cost | GGLS205305C0 | GA | C | GL | S2 | ST | 053 | 05 |  | BILL 6 | B06 | S1 | 03 | R00 | ACF03 | 053 |  | 100 | Z2 | GA | P12 | R | A6 | MDEC | POD2 |  | ST |  |  |  |  |  |  |  |
| GGLS103399C0 |  | GA-GL ; Concrete on Metal Decking G FLR (Zone S1) |  | 10d | 2011-03-14 A | 2011-04-24 A | GGLS105305C0 | 100% |  | 2011-04-04 | 2011-04-16 |  |  | CONCRETE [13360 h]; CONCRETE [336 m3]; Cost | GGLS103399C0 | GA | C | GL | S1 | CT | 033 | 99 |  | BILL 6 | B06 | S1 | 08 | R00 | ACF03 | 033 |  | 100 | Z2 | GA | P12 | R | A6 | MDEC | POD2 |  |  |  |  |  |  |  |  |  |
| GGLS203399C0 |  | GA-GL ; Concrete on Metal Decking G FLR (Zone S2) |  | 10d | 2011-04-12 A | 2011-04-17 A | GGLS205305C0 | 100% |  | 2011-03-21 | 2011-04-02 |  |  | CONCRETE [9816 h]; CONCRETE [247 m3]; Cost | GGLS203399C0 | GA | C | GL | S2 | CT | 033 | 99 |  | BILL 6 | B06 | S1 | 08 | R00 | ACF03 | 033 |  | 100 | Z2 | GA | P12 | R | A6 | MDEC | POD2 |  |  |  |  |  |  |  |  |  |
| GGLCO04408C0 |  | GA-GL ; C3 Bracket (Common Zone) |  | 90d | 2011-04-14 A | 2011-12-06 | G01CO04408C0 SS, GGLS107807C0, GGLS207807C0 | 42% | 52.2d | 2011-10-15 | 2012-02-05 | 42.3d | 0d | FACADE CURTAIN WALL 3 [3126 h]; Cost | GGLCO04408C0 | GA | C | GL | CO | FA | 044 | 08 | PP | BILL 6 | B06 | S1 | FC3 | R00 | ACF05 | 044 |  | 20 |  |  |  |  |  |  |  | CP | FA | 0 | 0 | 0 | 0 | 255680.71 | 42 | 35 |
| GGLS207807C0 |  | GA-GL ; Cementitious Fire Proofing at G FLR (Zone S2) |  | 14d | 2011-04-25 A | 2011-05-30 A | G01S203399C0 | 100% |  | 2011-04-06 | 2011-04-23 |  |  | CEMENTITIOUS FIREPROOFING [2480 h]; CEMENTITIOUS FIREPROOFING [4959 m2]; Cost | GGLS207807C0 | GA | C | GL | S2 | ST | 078 | 07 |  | BILL 6 | B06 | S1 | 04 | R00 | ACF03 | 078 |  | 100 | Z2 | GA | P12 | R | A6 | FIRE | POD2 |  | ST |  |  |  |  |  |  |  |
| GGLS107807C0 |  | GA-GL ; Cementitious Fire Proofing at G FLR (Zone S1) |  | 20d | 2011-04-26 A | 2011-05-30 A | G01S103399C0 | 100% |  | 2011-04-20 | 2011-05-14 |  |  | CEMENTITIOUS FIREPROOFING [3314 h]; CEMENTITIOUS FIREPROOFING [6627 m2]; Cost | GGLS107807C0 | GA | C | GL | S1 | ST | 078 | 07 |  | BILL 6 | B06 | S1 | 04 | R00 | ACF03 | 078 |  | 100 | Z2 | GA | P12 | R | A6 | FIRE | POD2 |  | ST |  |  |  |  |  |  |  |
| GGLGN02004C0 |  | GA-GL; Temporary Enclosure | level of effort | 198.42d | 2011-06-08 A | 2012-05-10 | GGLTR09203C0 SS, GGLPA09203C0 SS, GGLRD09203C0 SS | 7% | 184.19d | 2011-06-14 | 2012-02-12 | 42.3d | 0d | Labor General [0.6 h]; Cost |  | GA | C | GL | GEN | FA | GEN |  | PP |  | B06 |  | TE | R00 | ACF05 | 010 |  |  |  |  |  |  |  |  |  |  | FA |  |  |  |  |  | 33.1 | 19.66 |
| GGLCO04431C0 |  | GA-GL ; C3 Transom & Mullion (Common Zone) |  | 102d | 2011-12-06 | 2012-04-05 | GGLCO04408C0 |  |  |  |  | 42.3d | 0d | FACADE CURTAIN WALL 3 [12503.2 h]; Cost | GGLCO04431C0 | GA | C | GL | CO | FA | 044 | 31 | PP | BILL 6 | B06 | S1 | FC3 | R00 | ACF05 | 044 |  |  |  |  |  |  |  |  |  |  | FA |  |  |  |  |  |  |  |
| GGLCO04404C0 |  | GA-GL ; C3 Glazing (Common Zone) |  | 102d | 2012-01-11 | 2012-05-10 | GGLCO04431C0 SS+30d, GGLCO04431C0 FF, GGLGN02004C0 FF |  |  |  |  | 42.3d | 0d | FACADE CURTAIN WALL 3 [8058.1 h]; FACADE CURTAIN WALL 3 [2945 m2]; FACADE TOTAL QUANTITY m2 [2945 m2]; Cost | GGLCO04404C0 | GA | C | GL | CO | FA | 044 | 04 | PP | BILL 6 | B06 | S1 | FC3 | R00 | ACF05 | 044 |  |  |  |  |  |  |  |  |  |  | FA |  |  |  |  |  |  |  |
| GGLCO04401C0 |  | GA-GL ; VE Vestibule (Common Zone) |  | 42d | 2012-06-10 | 2012-07-30 | PGLS403391C0 FS+28d, GP1CO04401C0 SS |  |  |  |  | 144.62d | 104.32d | Labor General [279.3 h]; Cost | DP3CO04403C0 | GA | C | GL | CO | FA | 044 | 03 | PP | BILL 6 | B06 | S1 | VE | R00 | ACF05 | 044 |  |  |  |  |  |  |  |  |  |  | FA |  |  |  |  |  |  |  |
| GGLCO04407C10 |  | GA-GL ; CW-1 Bracket (Common Zone) |  | 60d | 2012-08-05 | 2012-10-16 | GP1CO04409C0 SS |  |  |  |  | 110.49d | 0d | Labor General [0.6 h]; Cost | GP3CO04407C0 | GA | C | GL | CO | FA | 044 | 07 | PP | BILL 6 | B06 | S1 | CW | R00 | ACF05 | 044 |  |  |  |  |  |  |  |  |  |  | FA |  |  |  |  |  |  |  |
| GGLCO04411C10 |  | GA-GL ; CW-1 External Partition (Common Zone) |  | 60d | 2012-08-21 | 2012-11-01 | GGLCO04407C10 SS+12d, GGLCO04407C10 FF |  |  |  |  | 110.49d | 0d | Labor General [0.6 h]; Cost | GP3CO04411C0 | GA | C | GL | CO | FA | 044 | 11 | PP | BILL 6 | B06 | S1 | CW | R00 | ACF05 | 044 |  |  |  |  |  |  |  |  |  |  | FA |  |  |  |  |  |  |  |
| GGLCO04410C10 |  | GA-GL ; CW-1 Stone Panel (Common Zone) |  | 60d | 2012-09-04 | 2012-11-17 | GGLCO04411C10 SS+12d, GGLCO04411C10 FF |  |  |  |  | 110.49d | 91.84d | Labor General [0.6 h]; Cost | GP3CO04410C0 | GA | C | GL | CO | FA | 044 | 10 | PP | BILL 6 | B06 | S1 | CW | R00 | ACF05 | 044 |  |  |  |  |  |  |  |  |  |  | FA |  |  |  |  |  |  |  |

| ID | WBS | Activity | Duration | Start | Finish | Predecessors | Complete | Remaining | Planned start | Planned finish | Total float | Free float | Resources | user_number8 | user_integer1 | user_integer2 | user_number7 | Change Order # | NEW ACTIVITY ID | change id | RENZ % COMPLETE | Claimed This Month | P_811 | P_711 | CCAD BUILDING(SET) | CCAD PHASE(SET) | CCAD FLOOR(SET) | CCAD ZONE(SET) | CCAD WORK(SET) | CCAD SECTION(SET) | CCAD SERIAL No.(SET) | CCAD RESPONSIBILITY(SET) | CCAD CBS(SET) | CCAD BILL(SET) | CCAD HANDOVER(SET) | CCAD TAG(SET) | CCAD REV(SET) | CCAD (VO) | CCADACF (SET) | CCAD CSA | CCAD SSCF | Act Selector % | CCAD DIVISION(SET) | July2011 Target% Complete | CCAD SUB ZONE MEP(SET) | CCAD MEQ | IDDD |
| --- | --- | --- | --- | --- | --- | --- | --- | --- | --- | --- | --- | --- | --- | --- | --- | --- | --- | --- | --- | --- | --- | --- | --- | --- | --- | --- | --- | --- | --- | --- | --- | --- | --- | --- | --- | --- | --- | --- | --- | --- | --- | --- | --- | --- | --- | --- | --- |
|  | 02 | **TR Room** |  | 2011-05-23 | 2012-10-18 |  |  |  |  |  |  |  |  |  |  |  |  |  |  |  |  |  |  |  |  |  |  |  |  |  |  |  |  |  |  |  |  |  |  |  |  |  |  |  |  |  |  |
| GGLTR09201C0 |  | GA-GL ; Metal Studs (TR RM) | 18d | 2011-05-23 A | 2011-10-09 | GGLPA09201C0, GGLS107807C0, GGLS207807C0 | 85% | 2.7d | 2011-08-08 | 2011-08-28 | 132.93d | 0d | PARTITIONS [29 h]; PARTITIONS - Metal Studs [5 m]; Cost | 0 | 0 | 0 | 0 | 313 | 885 | GGLTR09201C0 | 10 | 197.56 | 60 | 40 | GA | C | GL | TR | PT | 092 | 01 | PP | BILL 6 | B06 | S1 | 1F | R00 | CP | ACF06 | GP | 092 | PMS |  |  |  |  |  |
| GGLTR09203C0 |  | GA-GL ; Partitions 1st face (TR RM) | 24d | 2011-06-15 A | 2011-10-25 | GGLTR09201C0 | 40% | 14.4d | 2011-07-21 | 2011-08-17 | 136.53d | 99.6d | PARTITIONS [5 m]; PARTITIONS [16 h]; Cost |  |  |  |  | 314 | 886 | GGLTR09203C0 |  | 138.29 | 15 | 5 | GA | C | GL | TR | PT | 092 | 03 | PP | BILL 6 | B06 | S1 | 2F | R00 | CP | ACF06 | GP | 092 | P1F |  |  |  |  |  |
| GGLTR08101C0 |  | GA-GL ; Door Frames (TR RM) | 18d | 2011-07-10 A | 2012-02-02 | GGLTR09201C0, GNHE08101C0 FS+142d | 5% | 17.1d | 2011-08-28 | 2011-09-20 | 86.9d | 49.98d | ASSORTED DOORS [36 h]; Cost |  |  |  |  | 316 | 20001090 | GGLTR08101C0 |  |  |  |  | GA | C | GL | TR | DO | 081 | 01 | PP | BILL 6 | B06 | S1 | DF | R00 | CP | ACF06 |  | 081 |  | 08 |  |  |  |  |
| GGLTR26026C0 |  | GA-GL ; 2nd Fix, Conduit (TR RM) | 18d | 2011-10-09 | 2011-10-30 | GGLTR09201C0 |  |  |  |  | 132.93d | 0d | ELECTRICAL [451.2 h]; Cost |  |  |  |  |  |  | GGLTR26026C0 |  |  |  |  | GA | C | GL | TR | ME | 260 | 26 | PP | BILL 6 | B06 | S1 | 2F | R00 |  | ACF07 | MEP | 260 |  |  | 15 | 2n |  |  |
| GGLTR01005C0 |  | GA-GL ; 2nd, Wall Inspection by Consultant (TR RM) | 0d | 2011-10-30 | 2011-10-30 | GGLTR26026C0 |  |  |  |  | 132.93d | 96d | Cost |  |  |  |  |  |  | GGLTR01005C0 |  |  |  |  | GA | C | GL | TR | ME | 010 | 05 | PP | BILL 6 | B06 | S1 | WI | R00 |  | ACF07 | MEP | 010 |  |  |  | 2n |  |  |
| GGLTR09205C0 |  | GA-GL ; Partitions Closing (TR RM) | 29.88d | 2012-02-27 | 2012-04-02 | GAFOA09208C1 FF, GGLTR01005C0, GGLTR09201C0, GGLTR09203C0, GP1TR09205C0 SS+6d, GGLTR08101C0 FF, GGLPA09205C0 SS |  |  |  |  | 36.92d | 0d | PARTITIONS [5 m]; PARTITIONS [18 h]; Cost |  |  |  |  | 315 | 887 | GGLTR09205C0 |  |  |  |  | GA | C | GL | TR | PT | 092 | 05 | PP | BILL 6 | B06 | S1 | FF | R00 |  | ACF06 | GP | 092 | P2F |  |  |  |  |  |
| GGLTR09901C0 |  | GA-GL ; Wall Prime & 1st coat (TR RM) | 18d | 2012-04-02 | 2012-04-23 | GGLTR09205C0 |  |  |  |  | 36.92d | 0d | WALL PAINT [2 h]; WALL PAINT [2 m2]; Cost |  |  |  |  | 360 | 20001110 | GGLTR09901C0 |  |  |  |  | GA | C | GL | TR | PA | 099 | 01 | PP | BILL 6 | B06 | S1 | 01 | R00 |  | ACF06 |  | 099 |  |  |  |  |  |  |
| GGLTR23009C0 |  | GA-GL ; 2nd Fix, Inst of VAV'S CHW connection (TR RM) | 30d | 2012-04-02 | 2012-05-07 | GGLTR09205C0 |  |  |  |  | 66.92d | 0d | MECHANICAL [788.4 h]; Cost |  |  |  |  |  |  | GGLTR23009C0 |  |  |  |  | GA | C | GL | TR | ME | 230 | 09 | PP | BILL 6 | B06 | S1 | 2F | R00 |  | ACF07 | MEP | 230 |  |  | 45 | 2n |  |  |
| GGLTR23011C0 |  | GA-GL ; 2nd Fix, Inst of VCD's/FD's (TR RM) | 30d | 2012-04-02 | 2012-05-07 | GGLTR09205C0 |  |  |  |  | 66.92d | 0d | MECHANICAL [673.2 h]; Cost |  |  |  |  |  |  | GGLTR23011C0 |  |  |  |  | GA | C | GL | TR | ME | 230 | 11 | PP | BILL 6 | B06 | S1 | 2F | R00 |  | ACF07 | MEP | 230 |  |  | 40 | 2n |  |  |
| GGLTR26005C0 |  | GA-GL ; 2nd Fix, Wiring for Power/Lighting/Emergency (TR RM) | 30d | 2012-04-02 | 2012-05-07 | GGLTR09205C0, GGLTR26026C0 |  |  |  |  | 96.92d | 60d | ELECTRICAL [242.4 h]; Cost |  |  |  |  |  |  | GGLTR26005C0 |  |  |  |  | GA | C | GL | TR | ME | 260 | 05 | PP | BILL 6 | B06 | S1 | 2F | R00 |  | ACF07 | MEP | 260 |  |  | 30 | 2n |  |  |
| GGLTR26007C0 |  | GA-GL ; 2nd Fix, Cable Pulling (TR RM) | 30d | 2012-04-02 | 2012-05-07 | GGLTR09203C0, GGLTR09205C0 |  |  |  |  | 96.92d | 60d | ELECTRICAL [1117.2 h]; Cost |  |  |  |  |  |  | GGLTR26007C0 |  |  |  |  | GA | C | GL | TR | ME | 260 | 07 | PP | BILL 6 | B06 | S1 | 2F | R00 |  | ACF07 | MEP | 260 |  |  | 25 | 2n |  |  |
| GGLTR26009C0 |  | GA-GL ; 2nd Fix, Inst of Equipment (DB, TR, SG,BUS) (TR RM) | 30d | 2012-04-02 | 2012-05-07 | GGLTR09205C0 |  |  |  |  | 102.92d | 0d | ELECTRICAL [946.8 h]; Cost |  |  |  |  |  |  | GGLTR26009C0 |  |  |  |  | GA | C | GL | TR | ME | 260 | 09 | PP | BILL 6 | B06 | S1 | 2F | R00 |  | ACF04 | MEP | 260 |  |  |  | 2n | E |  |
| GGLTR26027C0 |  | GA-GL ; 2nd Fix, Wiring / Cabling (TR RM) | 30d | 2012-04-02 | 2012-05-07 | GGLTR09205C0 |  |  |  |  | 96.92d | 60d | ELECTRICAL [242.4 h]; Cost |  |  |  |  | 417 | 1318 | GGLTR26027C0 |  |  |  |  | GA | C | GL | TR | ME | 260 | 27 | PP | BILL 6 | B06 | S1 | 2F | R00 |  | ACF07 | MEP | 260 |  |  | 30 | 2n |  |  |
| GGLTR09501C0 |  | GA-GL ; Ceiling Grid and Service Tile (TR RM) | 24d | 2012-04-23 | 2012-05-21 | GGLTR09205C0, GGLTR09901C0 |  |  |  |  | 36.92d | 0d | CEILING GRID FOR GYPSUM [9.74 h]; CEILING GRID FOR GYPSUM [0.81 m2]; Cost |  |  |  |  | 336 | 1327 | GGLTR09501C0 |  |  |  |  | GA | C | GL | TR | CE | 095 | 01 | PP | BILL 6 | B06 | S1 | 01 | R00 |  | ACF06 |  | 095 |  |  |  |  |  | 1 |
| GGLTR09903C0 |  | GA-GL ; Wall - Final Paint (TR RM) | 12d | 2012-04-23 | 2012-05-07 | GGLTR09901C0 |  |  |  |  | 138.93d | 102d | WALL PAINT [2 h]; WALL PAINT [1 m2]; Cost |  |  |  |  | 361 | 1312 | GGLTR09903C0 |  |  |  |  | GA | C | GL | TR | PA | 099 | 03 | PP | BILL 6 | B06 | S1 | 02 | R00 |  | ACF06 |  | 099 |  |  |  |  |  |  |
| GGLTR23013C0 |  | GA-GL ; 2nd Fix, Insulation of CHW pipe & Duct (TR RM) | 30d | 2012-05-07 | 2012-06-11 | GGLTR23009C0, GGLTR23011C0 |  |  |  |  | 66.92d | 30d | MECHANICAL [1699.2 h]; Cost |  |  |  |  |  |  | GGLTR23013C0 |  |  |  |  | GA | C | GL | TR | ME | 230 | 13 | PP | BILL 6 | B06 | S1 | 2F | R00 |  | ACF07 | MEP | 230 |  |  |  | 2n |  |  |
| GGLTR26013C0 |  | GA-GL ; Final Fix, Termination & Gladding of Cables (TR RM) | 18d | 2012-05-07 | 2012-05-28 | GGLTR26009C0 |  |  |  |  | 102.92d | 66d | ELECTRICAL [62.4 h]; Cost |  |  |  |  |  |  | GGLTR26013C0 |  |  |  |  | GA | C | GL | TR | ME | 260 | 13 | PP | BILL 6 | B06 | S1 | FF | R00 |  | ACF07 | MEP | 260 |  |  |  | FF |  |  |
| GGLTR09601C0 |  | GA-GL ; Floor Finishes (TR RM) | 11.88d | 2012-05-21 | 2012-06-03 | GGLTR09501C0 |  |  |  |  | 43.05d | 0d | ASSORTED FLOOR FINISH [72 h]; ASSORTED FLOOR FINISH [39 m2]; Cost |  |  |  |  | 359 | 20001120 | GGLTR09601C0 |  |  |  |  | GA | C | GL | TR | FF | 096 | 01 | PP | BILL 6 | B06 | S1 | 01 | R00 |  | ACF06 |  | FF |  |  |  |  |  |  |
| GGLTR23003C0 |  | GA-GL ; Final Fix, Inst of Grilles & Diffusers (TR RM) | 18d | 2012-05-21 | 2012-06-11 | GGLTR09501C0 |  |  |  |  | 66.92d | 30d | MECHANICAL [1030.8 h]; Cost |  |  |  |  |  |  | GGLTR23003C0 |  |  |  |  | GA | C | GL | TR | ME | 230 | 03 | PP | BILL 6 | B06 | S1 | FF | R00 |  | ACF07 | MEP | 230 |  |  |  | FF |  |  |
| GGLTR23023C0 |  | GA-GL ; 2nd Fix, Flexible ducts (TR RM) | 30d | 2012-05-21 | 2012-06-26 | GGLTR09205C0, GGLTR09501C0 |  |  |  |  | 54.92d | 18d | MECHANICAL [1962 h]; Cost |  |  |  |  | 412 | 20001140 | GGLTR23023C0 |  |  |  |  | GA | C | GL | TR | ME | 230 | 23 | PP | BILL 6 | B06 | S1 | 2F | R00 |  | ACF07 | MEP | 230 |  |  | 40 | 2n |  |  |
| GGLTR23074C0 |  | GA-GL ; Final Fix, Grilles, panels & diffusers (TR RM) | 18d | 2012-05-21 | 2012-06-11 | GGLTR09501C0 |  |  |  |  | 66.92d | 30d | MECHANICAL [1030.8 h]; Cost |  |  |  |  | 419 | 20001160 | GGLTR23074C0 |  |  |  |  | GA | C | GL | TR | ME | 230 | 74 | PP | BILL 6 | B06 | S1 | FF | R00 |  | ACF07 | MEP | 230 |  |  |  | FF |  |  |
| GGLTR26015C0 |  | GA-GL ; Final Fix, Inst of Ceiling rose (TR RM) | 18d | 2012-05-21 | 2012-06-11 | GGLTR09501C0 |  |  |  |  | 66.92d | 30d | ELECTRICAL [34.8 h]; Cost |  |  |  |  |  |  | GGLTR26015C0 |  |  |  |  | GA | C | GL | TR | ME | 260 | 15 | PP | BILL 6 | B06 | S1 | FF | R00 |  | ACF07 | MEP | 260 |  |  |  | FF |  |  |
| GGLTR26019C0 |  | GA-GL ; Final Fix, Inst of Light fittings (TR RM) | 18d | 2012-05-21 | 2012-06-11 | GGLTR09501C0 |  |  |  |  | 66.92d | 30d | ELECTRICAL [7791.6 h]; Cost |  |  |  |  |  |  | GGLTR26019C0 |  |  |  |  | GA | C | GL | TR | ME | 260 | 19 | PP | BILL 6 | B06 | S1 | FF | R00 |  | ACF07 | MEP | 260 |  |  |  | FF |  |  |
| GGLTR26076C0 |  | GA-GL ; Final Fix, Lighting fittings (TR RM) | 18d | 2012-05-21 | 2012-06-11 | GGLTR09501C0 |  |  |  |  | 66.92d | 30d | ELECTRICAL [7791.6 h]; Cost |  |  |  |  | 420 | 20001170 | GGLTR26076C0 |  |  |  |  | GA | C | GL | TR | ME | 260 | 76 | PP | BILL 6 | B06 | S1 | FF | R00 |  | ACF07 | MEP | 260 |  |  |  | FF |  |  |
| GGLTR27002C0 |  | GA-GL ; 2nd Fix, Dressing of ELV panels (TR RM) | 30d | 2012-05-21 | 2012-06-26 | GGLTR09205C0, GGLTR27020C0 SS |  |  |  |  | 36.92d | 0d | ELECTRICAL [79.2 h]; Cost |  |  |  |  |  |  | GGLTR27002C0 |  |  |  |  | GA | C | GL | TR | ME | 270 | 02 | PP | BILL 6 | B06 | S1 | 2F | R00 |  | ACF07 | MEP | 270 |  |  |  | 2n |  |  |
| GGLTR27020C0 |  | GA-GL ; 2nd Fix, Inst of ELV Equipment (Panels) (TR RM) | 30d | 2012-05-21 | 2012-06-26 | GGLTR09205C0, GGLTR09501C0 |  |  |  |  | 36.92d | 0d | ELECTRICAL [1618.8 h]; Cost |  |  |  |  |  |  | GGLTR27020C0 |  |  |  |  | GA | C | GL | TR | ME | 270 | 20 | PP | BILL 6 | B06 | S1 | 2F | R00 |  | ACF04 | MEP | 270 |  |  |  | 2n | E |  |
| GGLTR08105C0 |  | GA-GL ; Doors (TR RM) | 18d | 2012-06-03 | 2012-06-25 | GGLTR08101C0, GGLTR09901C0, GGLTR09601C0 |  |  |  |  | 85.05d | 0d | ASSORTED DOORS [10 h]; ASSORTED DOORS [1 no]; Cost |  |  |  |  | 317 | 1325 | GGLTR08105C0 |  |  |  |  | GA | C | GL | TR | DO | 081 | 05 | PP | BILL 6 | B06 | S1 | DR | R00 |  | ACF06 |  | 081 |  | 08 |  |  |  |  |
| GGLTR21115C0 |  | GA-GL ; 2nd Fix, Gaseous Fire Suppression (TR RM) | 30d | 2012-06-03 | 2012-07-09 | GGLTR09601C0 |  |  |  |  | 43.05d | 6.12d | MECHANICAL [626.4 h]; Cost |  |  |  |  | 411 | 20001130 | GGLTR21115C0 |  |  |  |  | GA | C | GL | TR | ME | 211 | 15 | PP | BILL 6 | B06 | S1 | 2F | R00 |  | ACF07 | MEP | 211 |  |  |  | 2n |  |  |
| GGLTR08709C0 |  | GA-GL ; Ironmongery (TR RM) | 12d | 2012-06-25 | 2012-07-09 | GGLTR08105C0 |  |  |  |  | 85.05d | 48.12d | IRONMONGERY [10 h]; IRONMONGERY [1 no]; Cost |  |  |  |  | 322 | 20001100 | GGLTR08709C0 |  |  |  |  | GA | C | GL | TR | DO | 087 | 09 | PP | BILL 6 | B06 | S1 | IM | R00 |  | ACF06 |  | 087 |  | 08 |  |  |  |  |
| GGLTR27030C0 |  | GA-GL ; Final Fix, Inst of ELV device (Detector/Speaker) (TR RM) | 18d | 2012-06-26 | 2012-07-17 | GGLTR27002C0 |  |  |  |  | 36.92d | 0d | ELECTRICAL [710.4 h]; Cost |  |  |  |  |  |  | GGLTR27030C0 |  |  |  |  | GA | C | GL | TR | ME | 270 | 30 | PP | BILL 6 | B06 | S1 | FF | R00 |  | ACF07 | MEP | 270 |  |  |  | FF |  |  |
| GGLTR01006C0 |  | GA-GL ; 2nd, Ceiling Inspection by Consultants (TR RM) | 0d | 2012-07-17 | 2012-07-17 | GGLTR23009C0, GGLTR23011C0, GGLTR23013C0, GGLTR26007C0, GGLTR09501C0, GGLTR23003C0, GGLTR23074C0, GGLTR26015C0, GGLTR26019C0, GGLTR26076C0, GGLTR27030C0 |  |  |  |  | 36.92d | 0d | Cost |  |  |  |  |  |  | GGLTR01006C0 |  |  |  |  | GA | C | GL | TR | ME | 010 | 06 | PP | BILL 6 | B06 | S1 | CI | R00 |  | ACF07 | MEP | 010 |  |  |  | 2n |  |  |
| GGLTR09503C0 |  | GA-GL ; Ceiling closure (TR RM) | 12d | 2012-07-17 | 2012-07-31 | GGLTR01006C0, GGLTR09501C0, GGLTR21115C0, GGLTR26005C0, GGLTR26007C0, GGLTR26026C0, GGLTR26027C0, GGLTR23023C0 |  |  |  |  | 36.92d | 0d | ASSORTED CEILING FINISH [5.54 h]; CEILING GYPSUM [0.18 h]; ASSORTED CEILING FINISH [9 m2]; CEILING GYPSUM [1 m2]; Cost |  |  |  |  | 337 | 20001080 | GGLTR09503C0 |  |  |  |  | GA | C | GL | TR | CE | 095 | 03 | PP | BILL 6 | B06 | S1 | 02 | R00 |  | ACF06 |  | 095 |  |  |  |  |  |  |
| GGLTR09905C0 |  | GA-GL ; Ceiling Prime & 1st coat (TR RM) | 18d | 2012-07-31 | 2012-08-23 | GGLTR09503C0 |  |  |  |  | 36.92d | 0d | CEILING PAINT [2 h]; CEILING PAINT [2 m2]; Cost |  |  |  |  | 362 | 1313 | GGLTR09905C0 |  |  |  |  | GA | C | GL | TR | PA | 099 | 05 | PP | BILL 6 | B06 | S1 | 01 | R00 |  | ACF06 |  | 099 |  |  |  |  |  |  |
| GGLTR26017C0 |  | GA-GL ; Final Fix, Inst of Switch/Sockets (TR RM) | 12d | 2012-07-31 | 2012-08-14 | GGLTR09901C0, GGLTR09503C0 |  |  |  |  | 36.92d | 0d | ELECTRICAL [132 h]; Cost |  |  |  |  |  |  | GGLTR26017C0 |  |  |  |  | GA | C | GL | TR | ME | 260 | 17 | PP | BILL 6 | B06 | S1 | FF | R00 |  | ACF07 | MEP | 260 |  |  |  | FF |  |  |
| GGLTR01802C0 |  | GA-GL ; MEP de-snag, FIREM sign-off | 18d | 2012-08-14 | 2012-09-06 | GGLTR26017C0, GGLTR23074C0, GGLTR23003C0, GGLTR26076C0, GGLTR26013C0, GGLTR26015C0, GGLTR26019C0, GGLTR27030C0 |  |  |  |  | 36.92d | 0d | TESTING & COMMISSIONING [510 h]; Cost |  |  |  |  |  |  | S05CO01851C0 |  |  |  |  | GA | C | GL | TR | SC | 018 | 53 | PP | BILL 6 | B06 | S1 | 01 | R00 |  | ACF07 |  | 018 |  |  |  |  |  |  |
| GGLTR09907C0 |  | GA-GL ; Ceiling - Final paint (TR RM) | 12d | 2012-08-23 | 2012-09-06 | GGLTR09905C0 |  |  |  |  | 36.92d | 0d | CEILING PAINT [2 h]; CEILING PAINT [1 m2]; Cost |  |  |  |  | 363 | 1314 | GGLTR09907C0 |  |  |  |  | GA | C | GL | TR | PA | 099 | 07 | PP | BILL 6 | B06 | S1 | 02 | R00 |  | ACF06 |  | 099 |  |  |  |  |  |  |
| GGLTR01801C0 |  | GA-GL ; Touch-up & Clean / JV inspection /CIR /De-snag | 24d | 2012-09-06 | 2012-10-04 | GGLTR01802C0, GGLTR08709C0, GGLTR09601C0, GGLTR09903C0, GGLTR09907C0 |  |  |  |  | 36.92d | 0d | TESTING & COMMISSIONING [128 h]; Cost |  |  |  |  | 396 |  | GGLTR01851C0 |  |  |  |  | GA | C | GL | TR | SC | 018 | 51 | PP | BILL 6 | B06 | S1 | 02 | R00 |  | ACF07 |  | 018 |  |  |  |  |  |  |
| GGLTR01803C0 |  | GA-GL ; Consultant's final de-snag inspection | 12d | 2012-10-04 | 2012-10-18 | GGLTR01801C0 |  |  |  |  | 36.92d | 6.67d | Labor General [1 h]; Cost |  |  |  |  |  |  | CP3TS01803C0 |  |  |  |  | GA | C | GL | TR | SC | 018 | 03 | PP | BILL 6 | B06 | S1 | 03 | R00 |  | ACF07 |  | 018 |  |  |  |  |  |  |

| ID | WBS | Activity | Duration | Start | Finish | Predecessors | Complete | Remaining | Planned start | Planned finish | Total float | Free float | Resources | Cost | Actual cost | user_number8 | user_integer1 | user_integer2 | user_number7 | Change Order # | NEW ACTIVITY ID | change id | RENZ % COMPLETE | Claimed This Month | P_811 | P_711 | CCAD BUILDING(SET) | CCAD PHASE(SET) | CCAD FLOOR(SET) | CCAD ZONE(SET) | CCAD WORK(SET) | CCAD SECTION(SET) | CCAD SERIAL No.(SET) | CCAD RESPONSIBILITY(SET) | CCAD CBS(SET) | CCAD BILL(SET) | CCAD HANDOVER(SET) | CCAD TAG(SET) | CCAD REV(SET) | CCAD (VO) | CCADACF (SET) | CCAD CSA | CCAD SSCF | Act Selector % | CCAD DIVISION(SET) | July2011 Target% Complete | CCAD SUB ZONE MEP(SET) | R3 Finish | CCAD MEQ |
| --- | --- | --- | --- | --- | --- | --- | --- | --- | --- | --- | --- | --- | --- | --- | --- | --- | --- | --- | --- | --- | --- | --- | --- | --- | --- | --- | --- | --- | --- | --- | --- | --- | --- | --- | --- | --- | --- | --- | --- | --- | --- | --- | --- | --- | --- | --- | --- | --- | --- |
|  | 03 | **Public Area ( Elev.Lobby & Corridors )** |  | 2011-05-14 | 2012-12-23 |  |  |  |  |  |  |  |  |  |  |  |  |  |  |  |  |  |  |  |  |  |  |  |  |  |  |  |  |  |  |  |  |  |  |  |  |  |  |  |  |  |  |  |  |
| GGLPA09201C0 |  | GA-GL ; Metal Studs (Public Area) | 30d | 2011-05-14 A | 2011-10-05 | GGLPA23001C0 SS+12d | 85% | 4.5d | 2011-07-04 | 2011-08-07 | 105.62d | 0d | PARTITIONS [375 h]; PARTITIONS - Metal Studs [64 m]; Cost |  |  | 0 | 0 | 0 | 0 | 313 | 944 | S08PA09201C0 | 10 | 3160.86 | 60 | 50 | GA | C | GL | PA | PT | 092 | 01 | PP | BILL 6 | B06 | S1 | 1F | R00 | CP | ACF06 | GP | 092 | PMS |  |  |  |  |  |
| GGLPA09203C0 |  | GA-GL ; Partitions early wall & 1st face (Public Area) | 31.88d | 2011-06-14 A | 2011-10-27 | GGLPA09201C0 | 40% | 19.12d | 2011-06-14 | 2011-07-21 | 134.5d | 97.58d | PARTITIONS [64 m]; PARTITIONS [290 h]; Cost |  |  | 0 | 0 | 0 | 0 | 314 | 945 | S08PA09203C0 |  | 4425.21 |  |  | GA | C | GL | PA | PT | 092 | 03 | PP | BILL 6 | B06 | S1 | 2F | R00 | CP | ACF06 | GP | 092 | P1F |  |  |  |  |  |
| GGLPA08103C0 |  | GA-GL ; Door Frames (Public Area) | 36d | 2011-07-10 A | 2012-02-27 | GGLPA09201C0, GGLRD08103C0 SS+3d, GNHE08101C0 FS+142d | 5% | 34.2d | 2011-08-11 | 2011-09-24 | 36.92d | 0d | ASSORTED DOORS [23 h]; Cost |  |  |  |  |  |  | 316 | 947 | S08PA08103C0 |  |  |  |  | GA | C | GL | PA | DO | 081 | 03 | PP | BILL 6 | B06 | S1 | DF | R00 | CP | ACF06 |  | 081 |  | 08 |  |  |  |  |
| GGLPA21111C0 |  | GA-GL ; 1st Fix, Inst of Sprinkler main pipe (Public Area) | 156d | 2011-07-10 A | 2011-10-27 | GGLPA23001C0 SS | 85% | 23.4d | 2011-09-28 | 2012-04-04 | 117.72d | 64.2d | MECHANICAL [876 h]; Cost [29558 AED] | 29,557.99 | 25,124.29 | 0 | 0 | 0 | 0 |  |  | S08PA21111C0 |  | 22477.95 | 75 | 50 | GA | C | GL | PA | ME | 211 | 11 | PP | BILL 6 | B06 | S1 | 1F | R00 | CP | ACF04 | MEP | 211 | M1F |  | 95 | 1S |  |  |
| GGLPA21117C0 |  | GA-GL ; 1st Fix, Inst of Sprinkler branch pipe (Public Area) | 156d | 2011-07-10 A | 2011-11-01 | GGLPA09201C0 | 85% | 23.4d | 2011-11-16 | 2012-05-20 | 205.6d | 165.3d | MECHANICAL [931.2 h]; Cost [50874.3 AED] | 50,874.31 | 43,243.17 | 0 | 0 | 0 | 0 |  |  | S08PA21117C0 |  | 23591.32 | 75 | 50 | GA | C | GL | PA | ME | 211 | 17 | PP | BILL 6 | B06 | S1 | 1F | R00 | CP | ACF04 | MEP | 211 | M1F |  | 90 | 1S |  |  |
| GGLPA23001C0 |  | GA-GL ; 1st Fix, Inst. of Supports for MEP (Public Area) | 168d | 2011-07-10 A | 2011-11-12 | GGLS107807C0, GGLS207807C0 | 80% | 33.6d | 2011-06-30 | 2012-01-21 | 43.9d | 0d | MECHANICAL [2642.4 h]; Cost [28834.6 AED] | 28,834.58 | 23,067.67 |  |  |  |  |  |  | S08PA23001C0 |  |  | 80 | 75 | GA | C | GL | PA | ME | 230 | 01 | PP | BILL 6 | B06 | S1 | 1F | R00 | CP | ACF04 | MEP | 230 | M1F |  | 80 | 1S |  |  |
| GGLPA26001C0 |  | GA-GL ; 1st Fix, Inst of Trunking/Conduiting (Public Area) | 78d | 2011-07-10 A | 2011-11-22 | GGLPA23001C0 SS, GGLS107807C0, GGLS207807C0 | 45% | 42.9d | 2011-07-28 | 2011-10-29 | 87.12d | 33.6d | ELECTRICAL [2217.6 h]; Cost [24536.7 AED] | 24,536.7 | 11,041.51 |  |  |  |  |  |  | S08PA26001C0 |  | 36275.78 | 45 | 40 | GA | C | GL | PA | ME | 260 | 01 | PP | BILL 6 | B06 | S1 | 1F | R00 | CP | ACF04 | MEP | 260 | M1F |  | 25 | 1S |  |  |
| GGLPA26013C0 |  | GA-GL ; 1st Fix, Inst of Cable Tray (Public Area) | 72d | 2011-08-10 A | 2012-01-16 | GGLPA23001C0, GGLPA27010C0 SS+10d, GGLS107807C0, GGLS207807C0 | 40% | 43.2d | 2011-08-18 | 2011-11-15 | 53.52d | 0d | ELECTRICAL [244.8 h]; Cost [13923.6 AED] | 13,923.6 | 5,569.44 | 0 | 0 | 0 | 0 |  |  | S08PA26013C0 |  | 1597.28 | 35 | 0 | GA | C | GL | PA | ME | 260 | 13 | PP | BILL 6 | B06 | S1 | 1F | R00 | CP | ACF04 | MEP | 260 | M1F |  | 35 | 1S |  |  |
| GGLPA26009C0 |  | GA-GL ; 2nd Fix, Inst of Wall conduites (Public Area) | 48d | 2011-09-05 A | 2011-11-29 | GGLPA09201C0 | 10% | 43.2d | 2011-09-01 | 2011-10-26 | 110.42d | 73.5d | ELECTRICAL [451.2 h]; Cost [24536.7 AED] | 24,536.7 | 2,453.67 |  |  |  |  |  |  | S08PA26009C0 |  | 7379.44 |  |  | GA | C | GL | PA | ME | 260 | 09 | PP | BILL 6 | B06 | S1 | 2F | R00 |  | ACF07 | MEP | 260 |  |  | 25 | 2n |  |  |
| GGLPA22011C0 |  | GA-GL ; 2nd Fix, Drainage/Water pipe (wall) (Public Area) | 48d | 2011-10-05 | 2011-12-06 | GGLPA09201C0 |  |  |  |  | 105.62d | 68.7d | PLUMBING [644.4 h]; Cost |  |  |  |  |  |  |  |  | S08PA22011C0 |  | 2041.75 |  |  | GA | C | GL | PA | ME | 220 | 11 | PP | BILL 6 | B06 | S1 | 2F | R00 |  | ACF07 | MEP | 220 |  |  | 20 | 2n |  |  |
| GGLPA23017C0 |  | GA-GL ; 1st Fix, Inst of CHW pipe (Public Area) | 54d | 2011-11-12 | 2012-01-17 | GGLPA23001C0 |  |  |  |  | 43.9d | 0d | MECHANICAL [1650 h]; Cost |  |  |  |  |  |  |  |  | S08PA23017C0 |  |  |  |  | GA | C | GL | PA | ME | 230 | 17 | PP | BILL 6 | B06 | S1 | 1F | R00 |  | ACF04 | MEP | 230 | M1F |  | 50 | 1S |  |  |
| GGLPA27010C0 |  | GA-GL ; 1st Fix, Inst of Trunking for ELV system (Public Area) | 54d | 2011-11-12 | 2012-01-17 | GGLPA23001C0, GGLPA26001C0 SS+12d, GGLS107807C0, GGLS207807C0, GGLPA21111C0 FF |  |  |  |  | 53.52d | 0d | ELECTRICAL [1467.6 h]; Cost |  |  |  |  |  |  |  |  | S08PA27010C0 |  | 75755.18 |  |  | GA | C | GL | PA | ME | 270 | 10 | PP | BILL 6 | B06 | S1 | 1F | R00 |  | ACF04 | MEP | 270 | M1F |  | 80 | 1S |  |  |
| GGLPA23023C0 |  | GA-GL ; 1st Fix, Inst of Main Ducting (Public Area) | 54d | 2011-11-20 | 2012-01-25 | GGLPA23001C0, GGLPA23017C0 SS+7d |  |  |  |  | 84.9d | 0d | MECHANICAL [7458 h]; Cost |  |  |  |  |  |  |  |  | S08PA23023C0 |  |  |  |  | GA | C | GL | PA | ME | 230 | 23 | PP | BILL 6 | B06 | S1 | 1F | R00 |  | ACF04 | MEP | 230 | M1F |  | 50 | 1S |  |  |
| GGLPA22019C0 |  | GA-GL ; 1st Fix, Inst of Drainage pipe (ceiling) (Public Area) | 54d | 2011-11-23 | 2012-01-29 | GGLPA23001C0, GGLPA26013C0 SS+12d |  |  |  |  | 53.52d | 0d | PLUMBING [823.2 h]; Cost |  |  |  |  |  |  |  |  | S08PA22019C0 |  |  |  |  | GA | C | GL | PA | ME | 220 | 19 | PP | BILL 6 | B06 | S1 | 1F | R00 |  | ACF04 | MEP | 220 | M1F |  | 60 | 1S |  |  |
| GGLPA22005C0 |  | GA-GL ; 1st Fix, Inst of Water supply pipe (ceiling) (Public Area) | 54d | 2011-12-04 | 2012-02-07 | GGLPA22019C0 SS+7d, GGLPA23001C0 |  |  |  |  | 53.52d | 16.6d | PLUMBING [500.4 h]; Cost |  |  |  |  |  |  |  |  | S08PA22005C0 |  |  |  |  | GA | C | GL | PA | ME | 220 | 05 | PP | BILL 6 | B06 | S1 | 1F | R00 |  | ACF04 | MEP | 220 | M1F |  | 50 | 1S |  |  |
| GGLPA23009C0 |  | GA-GL ; 2nd Fix, Inst of VAV'S CHW connection (Public Area) | 48d | 2012-01-17 | 2012-03-14 | GGLPA23017C0 |  |  |  |  | 43.9d | 0d | MECHANICAL [788.4 h]; Cost |  |  |  |  |  |  |  |  | S08PA23009C0 |  |  |  |  | GA | C | GL | PA | ME | 230 | 09 | PP | BILL 6 | B06 | S1 | 2F | R00 |  | ACF07 | MEP | 230 |  |  | 50 | 2n |  |  |
| GGLPA27001C0 |  | GA-GL ; 1st Fix, Wiring/ Cabling work (Public Area) | 54d | 2012-01-17 | 2012-03-21 | GGLPA26001C0, GGLPA26013C0, GGLPA27010C0 |  |  |  |  | 91.9d | 51.6d | ELECTRICAL [242.4 h]; Cost |  |  |  |  |  |  |  |  | S08PA27001C0 |  |  |  |  | GA | C | GL | PA | ME | 270 | 01 | PP | BILL 6 | B06 | S1 | 1F | R00 |  | ACF04 | MEP | 270 | M1F |  | 75 | 1S |  |  |
| GGLPA23008C0 |  | GA-GL ; 1st Fix, Inst of VCD's/FD's (Public Area) | 54d | 2012-01-25 | 2012-03-29 | GGLPA23023C0 |  |  |  |  | 84.9d | 44.6d | MECHANICAL [673.2 h]; Cost |  |  |  |  |  |  |  |  | S08PA23008C0 |  |  |  |  | GA | C | GL | PA | ME | 230 | 08 | PP | BILL 6 | B06 | S1 | 1F | R00 |  | ACF04 | MEP | 230 | M1F |  |  | 1S |  |  |
| GGLPA01005C0 |  | GA-GL ; 2nd, Wall Inspection by Consultant (Public Area) | 0d | 2012-02-27 | 2012-02-27 | GGLPA08103C0, GGLPA22011C0, GGLPA26009C0 |  |  |  |  | 36.92d | 0d | Cost |  |  |  |  |  |  |  |  | S08PA01005C0 |  |  |  |  | GA | C | GL | PA | ME | 010 | 05 | PP | BILL 6 | B06 | S1 | WI | R00 |  | ACF07 | MEP | 010 |  |  |  | 2n |  |  |
| GGLPA09205C0 |  | GA-GL ; Partitions Closing (Public Area) | 36d | 2012-02-27 | 2012-04-09 | GAFOA09208C1 FF, GGLPA01005C0, GGLPA09203C0, GGLPA22005C0, GGLPA22019C0, GAFCI22001R02 FS+65d, GGLPA08103C0 FF |  |  |  |  | 36.92d | 0d | PARTITIONS [64 m]; PARTITIONS [380 h]; Cost |  |  |  |  |  |  | 315 | 946 | S08PA09205C0 |  |  |  |  | GA | C | GL | PA | PT | 092 | 05 | PP | BILL 6 | B06 | S1 | FF | R00 |  | ACF06 | GP | 092 | P2F |  |  |  |  |  |
| GGLPA09602C0 |  | GA-GL ; VIP LNG Broadloom Carpet (Public Area) | 12d | 2012-02-27 | 2012-03-12 | GGLPA09205C0 SS, OGNMU00003S0 SS |  |  |  |  | 186.3d | 0d | ASSORTED FLOOR FINISH [104 h]; Cost |  |  |  |  |  |  | 313 | 944 | S08PA09201C0 |  |  |  |  | GA | C | GL | PA | FF | 096 | 02 | PP | BILL 6 | B06 | S1 | 01 | R00 |  | ACF06 | CPT | CPT |  |  |  |  | R3 |  |
| GGLPA07101C0 |  | GA-GL ; Floor Waterproofing (Public Area) | 12d | 2012-03-12 | 2012-03-26 | GGLPA09602C0 |  |  |  |  | 186.3d | 0d | THERMAL & MOISTURE [300 m2]; THERMAL & MOISTURE [48 h]; Cost |  |  |  |  |  |  | 313 | 944 | S08PA09201C0 |  |  |  |  | GA | C | GL | PA | FF | 071 | 01 | PP | BILL 6 | B06 | S1 | 01 | R00 |  | ACF03 |  | 071 |  |  |  |  |  |  |
| GGLPA23015C0 |  | GA-GL ; 2nd Fix, Insulation of CHW pipe & Duct (Public Area) | 54d | 2012-03-14 | 2012-05-16 | GGLPA23009C0, GGLPA23017C0, GGLPA23023C0 |  |  |  |  | 43.9d | 3.6d | MECHANICAL [1699.2 h]; Cost |  |  |  |  |  |  |  |  | S08PA23015C0 |  |  |  |  | GA | C | GL | PA | ME | 230 | 15 | PP | BILL 6 | B06 | S1 | 2F | R00 |  | ACF07 | MEP | 230 |  |  |  | 2n |  |  |
| GGLPA09301C0 |  | GA-GL ; Floor Tile installation (Public Area) | 18d | 2012-03-26 | 2012-04-16 | GGLPA07101C0 |  |  |  |  | 186.3d | 99d | ASSORTED FLOOR FINISH [1424 h]; ASSORTED FLOOR FINISH [791 m2]; Cost |  |  |  |  |  |  | 313 | 944 | S08PA09201C0 |  |  |  |  | GA | C | GL | PA | FF | 093 | 01 | PP | BILL 6 | B06 | S1 | 06 | R00 |  | ACF06 |  | CT |  |  |  |  |  |  |
| GGLPA09901C0 |  | GA-GL ; Wall Prime & 1st coat (Public Area) | 36d | 2012-04-09 | 2012-05-21 | GGLPA09205C0 |  |  |  |  | 40.3d | 0d | WALL PAINT [26 h]; WALL PAINT [31 m2]; Cost |  |  |  |  |  |  | 328 | 956 | S08PA09901C0 |  |  |  |  | GA | C | GL | PA | PA | 099 | 01 | PP | BILL 6 | B06 | S1 | 01 | R00 |  | ACF06 |  | 099 |  |  |  |  |  |  |
| GGLPA26005C0 |  | GA-GL ; 2nd Fix, Wiring for Power/Lighting/Emergency (Public Area) | 48d | 2012-04-09 | 2012-06-04 | GGLPA09205C0 |  |  |  |  | 112.3d | 0d | ELECTRICAL [242.4 h]; Cost |  |  |  |  |  |  |  |  | S08PA26005C0 |  |  |  |  | GA | C | GL | PA | ME | 260 | 05 | PP | BILL 6 | B06 | S1 | 2F | R00 |  | ACF07 | MEP | 260 |  |  |  | 2n |  |  |
| GGLPA26007C0 |  | GA-GL ; 2nd Fix, Cable Pulling (Public Area) | 48d | 2012-04-09 | 2012-06-04 | GGLPA09201C0 SS+6d, GGLPA09205C0 |  |  |  |  | 142.3d | 102d | ELECTRICAL [1117.2 h]; Cost |  |  |  |  |  |  |  |  | S08PA26007C0 |  | 7501.7 |  |  | GA | C | GL | PA | ME | 260 | 07 | PP | BILL 6 | B06 | S1 | 2F | R00 |  | ACF07 | MEP | 260 |  |  | 10 | 2n |  |  |
| GGLPA26011C0 |  | GA-GL ; 2nd Fix, Inst of Equipment (DB) (Public Area) | 60d | 2012-04-09 | 2012-06-19 | GGLPA09205C0 |  |  |  |  | 70.3d | 0d | ELECTRICAL [524.4 h]; Cost |  |  |  |  |  |  |  |  | S08PA26011C0 |  |  |  |  | GA | C | GL | PA | ME | 260 | 11 | PP | BILL 6 | B06 | S1 | 2F | R00 |  | ACF04 | MEP | 260 |  |  |  | 2n |  | E |
| GGLPA26053C0 |  | GA-GL ; 2nd Fix, Wiring / Cabling (Public Area) | 48d | 2012-04-09 | 2012-06-04 | GGLPA09205C0 |  |  |  |  | 142.3d | 102d | ELECTRICAL [242.4 h]; Cost |  |  |  |  |  |  | 389 | 977 | S08PA26053C0 |  |  |  |  | GA | C | GL | PA | ME | 260 | 53 | PP | BILL 6 | B06 | S1 | 2F | R00 |  | ACF07 | MEP | 260 |  |  |  | 2n |  |  |
| GGLPA27020C0 |  | GA-GL ; 2nd Fix, Inst of ELV Equipment (Panels) (Public Area) | 60d | 2012-04-09 | 2012-06-19 | GGLPA09205C0 |  |  |  |  | 70.3d | 0d | ELECTRICAL [1618.8 h]; Cost |  |  |  |  |  |  |  |  | S08PA27020C0 |  |  |  |  | GA | C | GL | PA | ME | 270 | 20 | PP | BILL 6 | B06 | S1 | 2F | R00 |  | ACF04 | MEP | 270 |  |  |  | 2n |  | E |
| GGLPA09601C0 |  | GA-GL ; Flooring (stone) (Public Area) | 78d | 2012-05-10 | 2012-08-11 | GGLPA09205C0, GAFT1905509C0, GAFCI22002R02 FS+79d, GGLCO04404C0, GP1RG09601C0 SS+18d, GGLPA05501C0 FF |  |  |  |  | 42.3d | 0d | RUBBER FLOOR [16 h]; RUBBER FLOOR [37 m2]; Cost |  |  |  |  |  |  | 326 | 955 | S08PA09601C0 |  |  |  |  | GA | C | GL | PA | FF | 096 | 01 | PP | BILL 6 | B06 | S1 | 03 | R00 |  | ACF06 |  | ST |  |  |  |  | R3 |  |
| GGLPA05501C0 |  | GA-GL ; Handrails & balustrade (Public Area) | 36d | 2012-05-21 | 2012-07-03 | GGLPA09901C0, GAFT1805509C0, GAFT1405509C0, GAFT1905509C0, GAFT1705509C0, GZ9GZ05152R2 FF, DV10GZ05552R2 FF |  |  |  |  | 75.3d | 33d | SECONDARY STEEL [721 h]; Cost |  |  |  |  |  |  |  |  | S08PA05501C0 |  |  |  |  | GA | C | GL | PA | SW | 055 | 01 | PP | BILL 6 | B06 | S1 | 01 | R00 |  | ACF03 |  | a |  |  |  |  |  |  |
| GGLPA09501C0 |  | GA-GL ; Ceiling Grid and Service Tile (Public Area) | 36d | 2012-05-21 | 2012-07-03 | GGLPA09205C0 SS+15d, GGLPA21117C0, GGLPA23008C0, GGLPA23009C0, GGLPA23015C0, GGLPA27001C0, GAFCI22002R02 FS+79d, GGLPA09901C0 |  |  |  |  | 40.3d | 0d | CEILING GRID FOR GYPSUM [564.92 h]; CEILING GRID FOR GYPSUM [48.44 m2]; Cost |  |  |  |  |  |  | 323 | 952 | S08PA09501C0 |  |  |  |  | GA | C | GL | PA | CE | 095 | 01 | PP | BILL 6 | B06 | S1 | 01 | R00 |  | ACF06 |  | 095 |  |  |  |  |  |  |
| GGLPA33001C0 |  | GA-GL ; Saintaryware installation (Public Area) | 0d | 2012-05-21 | 2012-05-21 | GGLPA09901C0 |  |  |  |  | 194.3d | 154d | Cost |  |  |  |  |  |  | 313 | 944 | S08PA09201C0 |  |  |  |  | GA | C | GL | PA | AC | 330 | 01 | PP | BILL 6 | B06 | S1 | SP | R00 |  | ACF08 |  | 330 |  |  |  |  |  |  |
| GGLPA23021C0 |  | GA-GL ; 2nd Fix, Inst of Flexible Duct & Plenum boxes (Public Area) | 54d | 2012-05-28 | 2012-07-31 | GGLPA09205C0, GGLPA09501C0 SS+6d |  |  |  |  | 58.3d | 0d | MECHANICAL [1962 h]; Cost |  |  |  |  |  |  |  |  | S08PA23021C0 |  |  |  |  | GA | C | GL | PA | ME | 230 | 21 | PP | BILL 6 | B06 | S1 | 2F | R00 |  | ACF07 | MEP | 230 |  |  |  | 2n |  |  |
| GGLPA26015C0 |  | GA-GL ; Final Fix, Termination & Gladding of Cables (Public Area) | 30d | 2012-06-04 | 2012-07-10 | GGLPA26005C0 |  |  |  |  | 112.3d | 72d | ELECTRICAL [62.4 h]; Cost |  |  |  |  |  |  |  |  | S08PA26015C0 |  |  |  |  | GA | C | GL | PA | ME | 260 | 15 | PP | BILL 6 | B06 | S1 | FF | R00 |  | ACF07 | MEP | 260 |  |  |  | FF |  |  |
| GGLPA09701C0 |  | GA-GL ; Wall finishes (ST, WD, WC) (Public Area) | 60d | 2012-06-19 | 2012-08-30 | GGLPA26011C0, GGLPA27020C0, GAFCI22002R02 FS+176d, GGLCO04404C0 |  |  |  |  | 70.3d | 0d | ASSORTED WALL FINISH [75 h]; ASSORTED WALL FINISH [86 m2]; Cost |  |  |  |  |  |  | 105 | 1002 | S08PA09701C0 |  |  |  |  | GA | C | GL | PA | WF | 097 | 01 | PP | BILL 6 | B06 | S1 | 01 | R00 |  | ACF06 |  | 097 |  |  |  |  |  |  |
| GGLPA09905C0 |  | GA-GL ; Ceiling Prime & 1st coat (Public Area) | 36d | 2012-07-03 | 2012-08-14 | GGLPA09501C0 |  |  |  |  | 96.3d | 0d | CEILING PAINT [87 h]; CEILING PAINT [107 m2]; Cost |  |  |  |  |  |  | 330 | 958 | S08PA09905C0 |  |  |  |  | GA | C | GL | PA | PA | 099 | 05 | PP | BILL 6 | B06 | S1 | 01 | R00 |  | ACF06 |  | 099 |  |  |  |  |  |  |
| GGLPA21115C0 |  | GA-GL ; 2nd Fix, Inst of Sprinkler droppers (Public Area) | 48d | 2012-07-03 | 2012-08-30 | GGLPA09501C0 |  |  |  |  | 40.3d | 0d | MECHANICAL [1734 h]; Cost |  |  |  |  |  |  |  |  | S08PA21115C0 |  |  |  |  | GA | C | GL | PA | ME | 211 | 15 | PP | BILL 6 | B06 | S1 | 2F | R00 |  | ACF07 | MEP | 211 |  |  |  | 2n |  |  |
| GGLPA26017C0 |  | GA-GL ; Final Fix, Inst of Ceiling rose (Public Area) | 30d | 2012-07-03 | 2012-08-07 | GGLPA09501C0 |  |  |  |  | 40.3d | 0d | ELECTRICAL [34.8 h]; Cost |  |  |  |  |  |  |  |  | S08PA26017C0 |  |  |  |  | GA | C | GL | PA | ME | 260 | 17 | PP | BILL 6 | B06 | S1 | FF | R00 |  | ACF07 | MEP | 260 |  |  |  | FF |  |  |
| GGLPA27002C0 |  | GA-GL ; 2nd Fix, Wiring Droppers (Public Area) | 48d | 2012-07-03 | 2012-08-30 | GGLPA09501C0 |  |  |  |  | 40.3d | 0d | ELECTRICAL [242.4 h]; Cost |  |  |  |  |  |  |  |  | S08PA27002C0 |  |  |  |  | GA | C | GL | PA | ME | 270 | 02 | PP | BILL 6 | B06 | S1 | 2F | R00 |  | ACF07 | MEP | 270 |  |  |  | 2n |  |  |
| GGLPA23019C0 |  | GA-GL ; Final Fix, Inst of Grilles & Diffusers (Public Area) | 36d | 2012-07-31 | 2012-09-13 | GGLPA09501C0, GGLPA23021C0 |  |  |  |  | 58.3d | 18d | MECHANICAL [1030.8 h]; Cost |  |  |  |  |  |  |  |  | S08PA23019C0 |  |  |  |  | GA | C | GL | PA | ME | 230 | 19 | PP | BILL 6 | B06 | S1 | FF | R00 |  | ACF07 | MEP | 230 |  |  |  | FF |  |  |
| GGLPA26003C0 |  | GA-GL ; Final Fix, Inst of Light fittings (Public Area) | 48d | 2012-08-07 | 2012-10-04 | GGLPA09501C0, GGLPA26017C0 |  |  |  |  | 40.3d | 0d | ELECTRICAL [7791.6 h]; Cost |  |  |  |  |  |  |  |  | S08PA26003C0 |  |  |  |  | GA | C | GL | PA | ME | 260 | 03 | PP | BILL 6 | B06 | S1 | FF | R00 |  | ACF07 | MEP | 260 |  |  |  | FF |  |  |
| GGLPA08107C0 |  | GA-GL ; Doors (Public Area) | 36d | 2012-08-11 | 2012-09-24 | GGLPA08103C0, GGLPA09901C0, GGLPA09301C0, GGLPA09601C0 |  |  |  |  | 87.3d | 0d | ASSORTED DOORS [30 h]; ASSORTED DOORS [3 no]; Cost |  |  |  |  |  |  | 317 | 948 | S08PA08107C0 |  |  |  |  | GA | C | GL | PA | DO | 081 | 07 | PP | BILL 6 | B06 | S1 | DR | R00 |  | ACF06 |  | 081 |  | 08 |  |  |  |  |
| GGLPA09903C0 |  | GA-GL ; Wall Final Paint (Public Area) | 36d | 2012-08-14 | 2012-09-27 | GGLPA09901C0, GGLPA09905C0 |  |  |  |  | 96.3d | 56d | WALL PAINT [15 h]; WALL PAINT [17 m2]; Cost |  |  |  |  |  |  | 329 | 957 | S08PA09903C0 |  |  |  |  | GA | C | GL | PA | PA | 099 | 03 | PP | BILL 6 | B06 | S1 | 02 | R00 |  | ACF06 |  | 099 |  |  |  |  |  |  |
| GGLPA11002C0 |  | GA-GL ; CPT installation (Public Area) | 24d | 2012-08-14 | 2012-09-13 | GGLPA09905C0 |  |  |  |  | 108.3d | 68d | FF&E [112 h]; Cost |  |  |  |  |  |  | 313 | 944 | S08PA09201C0 |  |  |  |  | GA | C | GL | PA | FF | 110 | 02 | PP | BILL 6 | B06 | S1 | 04 | R00 |  | ACF08 |  | e |  |  |  |  |  |  |
| GGLPA11009C0 |  | GA-GL ; Signage (Public Area) | 13.88d | 2012-08-30 | 2012-09-16 | GGLPA09701C0 |  |  |  |  | 106.43d | 66.12d | SIGNAGES [5 h]; SIGNAGES [4.51 no]; Cost |  |  |  |  |  |  | 322 | 951 | S08PA11009C0 |  |  |  |  | GA | C | GL | PA | SA | 110 | 09 | PP | BILL 6 | B06 | S1 | 09 | R00 |  | ACF08 |  | c |  | 08 |  |  |  |  |
| GGLPA21113C0 |  | GA-GL ; Final Fix, Inst of Sprinklers head/ Extinguisher (Public Area) | 30d | 2012-08-30 | 2012-10-04 | GGLPA09501C0, GGLPA21115C0 |  |  |  |  | 40.3d | 0d | MECHANICAL [297.6 h]; Cost |  |  |  |  |  |  |  |  | S08PA21113C0 |  |  |  |  | GA | C | GL | PA | ME | 211 | 13 | PP | BILL 6 | B06 | S1 | FF | R00 |  | ACF07 | MEP | 211 |  |  |  | FF |  |  |
| GGLPA27030C0 |  | GA-GL ; Final Fix, Inst of ELV devise (Detector/Speaker) (Public Area) | 30d | 2012-08-30 | 2012-10-04 | GGLPA09501C0, GGLPA27002C0 |  |  |  |  | 40.3d | 0d | ELECTRICAL [710.4 h]; Cost |  |  |  |  |  |  |  |  | S08PA27030C0 |  |  |  |  | GA | C | GL | PA | ME | 270 | 30 | PP | BILL 6 | B06 | S1 | FF | R00 |  | ACF07 | MEP | 270 |  |  |  | FF |  |  |
| GGLPA08709C0 |  | GA-GL ; Ironmongery (Public Area) | 12d | 2012-09-24 | 2012-10-08 | GGLPA08107C0 |  |  |  |  | 87.3d | 47d | IRONMONGERY [20 h]; IRONMONGERY [2 no]; Cost |  |  |  |  |  |  | 322 | 951 | S08PA08709C0 |  |  |  |  | GA | C | GL | PA | DO | 087 | 09 | PP | BILL 6 | B06 | S1 | IM | R00 |  | ACF06 |  | 087 |  | 08 |  |  |  |  |
| GGLPA01006C0 |  | GA-GL ; 2nd, Ceiling Inspection by Consultants (Public Area) | 0d | 2012-10-04 | 2012-10-04 | GGLPA21115C0, GGLPA23009C0, GGLPA23015C0, GGLPA27002C0, GGLPA09501C0, GGLPA21113C0, GGLPA23019C0, GGLPA26003C0, GGLPA26017C0, GGLPA27030C0, GGLPA26015C0 |  |  |  |  | 40.3d | 0d | Cost |  |  |  |  |  |  |  |  | S08PA01006C0 |  |  |  |  | GA | C | GL | PA | ME | 010 | 06 | PP | BILL 6 | B06 | S1 | CI | R00 |  | ACF07 | MEP | 010 |  |  |  | 2n |  |  |
| GGLPA09503C0 |  | GA-GL ; Ceiling closure - ACT/Gypsum (Public Area) | 22d | 2012-10-04 | 2012-11-01 | GAFOA09507C1, GGLPA01006C0, GGLPA21115C0, GGLPA26005C0, GGLPA27001C0, GGLPA27002C0, GGLPA09701C0, GGLPA23021C0, GGLPA26053C0, GGLPA26007C0 |  |  |  |  | 40.3d | 0d | ASSORTED CEILING FINISH [320.42 h]; CEILING GYPSUM [15.99 h]; ASSORTED CEILING FINISH [521 m2]; CEILING GYPSUM [48 m2]; Cost |  |  |  |  |  |  | 324 | 953 | S08PA09503C0 |  |  |  |  | GA | C | GL | PA | CE | 095 | 03 | PP | BILL 6 | B06 | S1 | 02 | R00 |  | ACF06 |  | 095 |  |  |  |  |  |  |
| GGLPA09907C0 |  | GA-GL ; Ceiling Final paint (Public Area) | 18d | 2012-11-01 | 2012-11-24 | GGLPA09601C0, GGLPA09905C0, GGLPA09503C0 |  |  |  |  | 50.3d | 0d | CEILING PAINT [47 h]; CEILING PAINT [58 m2]; Cost |  |  |  |  |  |  | 331 | 959 | S08PA09907C0 |  |  |  |  | GA | C | GL | PA | PA | 099 | 07 | PP | BILL 6 | B06 | S1 | 02 | R00 |  | ACF06 |  | 099 |  |  |  |  |  |  |
| GGLPA26019C0 |  | GA-GL ; Final Fix, Inst of Switch/Sockets (Public Area) | 18d | 2012-11-01 | 2012-11-24 | GGLPA09901C0, GGLPA09503C0 |  |  |  |  | 40.3d | 0d | ELECTRICAL [132 h]; Cost |  |  |  |  |  |  |  |  | S08PA26019C0 |  |  |  |  | GA | C | GL | PA | ME | 260 | 19 | PP | BILL 6 | B06 | S1 | FF | R00 |  | ACF07 | MEP | 260 |  |  |  | FF |  |  |

| ID | WBS | Activity | Duration | Start | Finish | Predecessors | Complete | Remaining | Planned start | Planned finish | Total float | Free float | Resources | Cost | Actual cost | change id | CCAD BUILDING(SET) | CCAD PHASE(SET) | CCAD FLOOR(SET) | CCAD ZONE(SET) | CCAD WORK(SET) | CCAD SECTION(SET) | CCAD SERIAL No.(SET) | CCAD RESPONSIBILITY(SET) | CCAD CBS(SET) | CCAD BILL(SET) | CCAD HANDOVER(SET) | CCAD TAG(SET) | CCAD REV(SET) | CCADACF (SET) | CCAD SSCF | user_number8 | user_integer1 | user_integer2 | user_number7 | Change Order # | NEW ACTIVITY ID | RENZ % COMPLETE | Claimed This Month | P_811 | P_711 | CCAD (VO) | CCAD CSA | Act Selector % | CCAD DIVISION(SET) | July2011 Target% Complete | CCAD SUB ZONE MEP(SET) | CCAD MEQ |
| --- | --- | --- | --- | --- | --- | --- | --- | --- | --- | --- | --- | --- | --- | --- | --- | --- | --- | --- | --- | --- | --- | --- | --- | --- | --- | --- | --- | --- | --- | --- | --- | --- | --- | --- | --- | --- | --- | --- | --- | --- | --- | --- | --- | --- | --- | --- | --- | --- |
|  | 10 | **Precommissioning Tesing & snagging (Public Area)** |  | 2012-11-24 | 2012-12-23 |  |  |  |  |  |  |  |  |  |  |  |  |  |  |  |  |  |  |  |  |  |  |  |  |  |  |  |  |  |  |  |  |  |  |  |  |  |  |  |  |  |  |  |
| GGLTS01804C0 |  | GA-GL ; MEP de-snag, FIREM sign-off | 10d | 2012-11-24 | 2012-12-06 | GGLPA26015C0, GGLPA21113C0, GGLPA23019C0, GGLPA26017C0, GGLPA26003C0, GGLPA27030C0, GGLPA26019C0, GGLPA33001C0, GVT1114341C0 |  |  |  |  | 40.3d | 0d | TESTING & COMMISSIONING [510 h]; Cost |  |  | GGLTS01801C0 | GA | C | GL | TS | SC | 018 | 01 | PP | BILL 6 | B06 | S1 | 01 | R00 | ACF07 | 018 |  |  |  |  |  |  |  |  |  |  |  |  |  |  |  |  |  |
| GGLTS01806C0 |  | GA-GL ; Touch-up & Clean / JV inspection /CIR /De-snag | 14.5d | 2012-12-06 | 2012-12-23 | GGLCO04401C0, GGLPA08709C0, GGLPA09301C0, GGLPA09601C0, GGLPA09701C0, GGLPA09903C0, GGLPA09907C0, GGLPA11002C0, GGLPA11009C0, GGLTS01804C0, GGLPA05501C0, GGLPA09503C0 |  |  |  |  | 40.3d | 0d | TESTING & COMMISSIONING [128 h]; Cost |  |  | GGLTS01802C0 | GA | C | GL | TS | SC | 018 | 02 | PP | BILL 6 | B06 | S1 | 02 | R00 | ACF07 | 018 |  |  |  |  |  |  |  |  |  |  |  |  |  |  |  |  |  |
| GGLTS01808C0 |  | GA-GL ; Consultant's final de-snag inspection | 0d | 2012-12-23 | 2012-12-23 | GGLTS01806C0 |  |  |  |  | 58.3d | 30.3d | Cost |  |  | GGLTS01803C0 | GA | C | GL | TS | SC | 018 | 03 | PP | BILL 6 | B06 | S1 | 03 | R00 | ACF07 | 018 |  |  |  |  |  |  |  |  |  |  |  |  |  |  |  |  |  |
|  | 04 | **Recept Desk , Hall Way** |  | 2011-05-07 | 2013-01-30 |  |  |  |  |  |  |  |  |  |  |  |  |  |  |  |  |  |  |  |  |  |  |  |  |  |  |  |  |  |  |  |  |  |  |  |  |  |  |  |  |  |  |  |
| GGLRD09201C0 |  | GA-GL ; Metal Studs (Recept Desk,Hall) | 36d | 2011-05-07 A | 2011-10-06 | GGLRD23001C0 SS | 85% | 5.4d | 2011-07-18 | 2011-08-28 | 17.6d | 0d | PARTITIONS [1934 h]; PARTITIONS - Metal Studs [331 m]; Cost |  |  | S08PA09201C0 | GA | C | GL | RD | PT | 092 | 01 | PP | BILL 6 | B06 | S1 | 1F | R00 | ACF06 | 092 | 0 | 0 | 0 | 0 | 313 | 944 | 10 | 16396.99 | 60 | 40 | CP | GP |  |  |  |  |  |
| GGLRD09203C0 |  | GA-GL ; Partitions 1st face (Recept Desk,Hall) | 45d | 2011-06-08 A | 2011-11-10 | GGLRD09201C0 | 40% | 27d | 2011-08-04 | 2011-09-28 | 90.6d | 62.6d | PARTITIONS [331 m]; PARTITIONS [1515 h]; Cost |  |  | S08PA09203C0 | GA | C | GL | RD | PT | 092 | 03 | PP | BILL 6 | B06 | S1 | 2F | R00 | ACF06 | 092 | 0 | 0 | 0 | 0 | 314 | 945 |  | 22955.79 |  |  | CP | GP | P1F |  |  |  |  |
| GGLRD08103C0 |  | GA-GL ; Door Frames (Recept Desk,Hall) | 36d | 2011-07-10 A | 2012-02-27 | GGLRD09201C0 SS+14d, GGLPA08103C10 SS+3d, GNHE08101C0 FS+142d | 5% | 34.2d | 2011-07-28 | 2011-09-10 | 36.92d | 0d | ASSORTED DOORS [121 h]; Cost |  |  | S08PA08103C0 | GA | C | GL | RD | DO | 081 | 03 | PP | BILL 6 | B06 | S1 | DF | R00 | ACF06 | 081 |  |  |  |  | 316 | 947 |  |  |  |  | CP |  |  | 08 |  |  |  |
| GGLRD21111C0 |  | GA-GL ; 1st Fix, Inst of Sprinkler main pipe (Recept Desk,Hall) | 120d | 2011-07-10 A | 2011-11-14 | GGLRD23001C0 SS | 70% | 36d | 2011-10-01 | 2012-02-25 | 92d | 0d | MECHANICAL [541.2 h]; Cost [29558 AED] | 29,557.99 | 20,690.59 | S08PA21111C0 | GA | C | GL | RD | ME | 211 | 11 | PP | BILL 6 | B06 | S1 | 1F | R00 | ACF04 | 211 | 0 | 0 | 0 | 0 |  |  |  | 20581.41 | 65 | 60 | CP | MEP | M1F |  | 90 | 1S |  |
| GGLRD21117C0 |  | GA-GL ; 1st Fix, Inst of Sprinkler branch pipe (Recept Desk,Hall) | 120d | 2011-07-10 A | 2011-12-28 | GGLRD21111C0 | 70% | 36d | 2011-11-19 | 2012-04-10 | 135d | 107d | MECHANICAL [931.2 h]; Cost [50874.3 AED] | 50,874.31 | 35,612.02 | S08PA21117C0 | GA | C | GL | RD | ME | 211 | 17 | PP | BILL 6 | B06 | S1 | 1F | R00 | ACF04 | 211 | 0 | 0 | 0 | 0 |  |  |  | 2948.91 | 65 | 50 | CP | MEP | M1F |  | 85 | 1S |  |
| GGLRD23001C0 |  | GA-GL ; 1st Fix, Inst. of Supports for MEP (Recept Desk,Hall) | 72d | 2011-07-10 A | 2011-11-23 | GGLS107807C0, GGLS207807C0 | 40% | 43.2d | 2011-06-30 | 2011-09-24 | 17.6d | 0d | MECHANICAL [511.2 h]; Cost [28834.6 AED] | 28,834.58 | 11,533.83 | S08PA23001C0 | GA | C | GL | RD | ME | 230 | 01 | PP | BILL 6 | B06 | S1 | 1F | R00 | ACF04 | 230 | 0 | 0 | 0 | 0 |  |  |  |  | 35 | 20 | CP | MEP | M1F |  | 95 | 1S |  |
| GGLRD26001C0 |  | GA-GL ; 1st Fix, Inst of Trunking/Conduiting (Recept Desk,Hall) | 54d | 2011-10-01 | 2011-12-07 | GGLRD23001C0 SS, GGLS107807C0, GGLS207807C0 |  |  |  |  | 28d | 0d | ELECTRICAL [451.2 h]; Cost |  |  | S08PA26001C0 | GA | C | GL | RD | ME | 260 | 01 | PP | BILL 6 | B06 | S1 | 1F | R00 | ACF04 | 260 |  |  |  |  |  |  |  | 17710.66 |  |  |  | MEP | M1F |  | 60 | 1S |  |
| GGLRD22011C0 |  | GA-GL ; 2nd Fix, Drainage/Water pipe (wall) (Recept Desk,Hall) | 48d | 2011-10-06 | 2011-12-07 | GGLRD09201C0 |  |  |  |  | 69.6d | 0d | PLUMBING [644.4 h]; Cost |  |  | S08PA22011C0 | GA | C | GL | RD | ME | 220 | 11 | PP | BILL 6 | B06 | S1 | 2F | R00 | ACF07 | 220 |  |  |  |  |  |  |  |  |  |  |  | MEP |  |  | 10 | 2n |  |
| GGLRD26009C0 |  | GA-GL ; 2nd Fix, Inst of Wall conduites (Recept Desk,Hall) | 48d | 2011-10-06 | 2011-12-07 | GGLRD09201C0 |  |  |  |  | 69.6d | 0d | ELECTRICAL [451.2 h]; Cost |  |  | S08PA26009C0 | GA | C | GL | RD | ME | 260 | 09 | PP | BILL 6 | B06 | S1 | 2F | R00 | ACF07 | 260 |  |  |  |  |  |  |  | 2951.78 |  |  |  | MEP |  |  | 10 | 2n |  |
| GGLRD27010C0 |  | GA-GL ; 1st Fix, Inst of Trunking for ELV system (Recept Desk,Hall) | 54d | 2011-10-15 | 2011-12-21 | GGLRD23001C0 SS, GGLRD26001C0 SS+12d, GGLS107807C0, GGLS207807C0 |  |  |  |  | 28d | 0d | ELECTRICAL [597.6 h]; Cost |  |  | S08PA27010C0 | GA | C | GL | RD | ME | 270 | 10 | PP | BILL 6 | B06 | S1 | 1F | R00 | ACF04 | 270 |  |  |  |  |  |  |  | 32099.29 |  |  |  | MEP | M1F |  | 85 | 1S |  |
| GGLRD26013C0 |  | GA-GL ; 1st Fix, Inst of Cable Tray (Recept Desk,Hall) | 54d | 2011-10-26 | 2012-01-03 | GGLRD23001C0 SS, GGLRD27010C0 SS+10d, GGLS107807C0, GGLS207807C0 |  |  |  |  | 28d | 0d | ELECTRICAL [244.8 h]; Cost |  |  | S08PA26013C0 | GA | C | GL | RD | ME | 260 | 13 | PP | BILL 6 | B06 | S1 | 1F | R00 | ACF04 | 260 |  |  |  |  |  |  |  | 9583.69 |  |  |  | MEP | M1F |  | 60 | 1S |  |
| GGLRD22019C0 |  | GA-GL ; 1st Fix, Inst of Drainage pipe (ceiling) (Recept Desk,Hall) | 54d | 2011-11-13 | 2012-01-17 | GGLRD23001C0 SS, GGLRD26013C0 SS+12d |  |  |  |  | 28d | 0d | PLUMBING [644.4 h]; Cost |  |  | S08PA22019C0 | GA | C | GL | RD | ME | 220 | 19 | PP | BILL 6 | B06 | S1 | 1F | R00 | ACF04 | 220 |  |  |  |  |  |  |  |  |  |  |  | MEP | M1F |  | 65 | 1S |  |
| GGLRD22005C0 |  | GA-GL ; 1st Fix, Inst of Water supply pipe (ceiling) (Recept Desk,Hall) | 54d | 2011-11-21 | 2012-01-25 | GGLRD22019C0 SS+7d, GGLRD23001C0 SS |  |  |  |  | 28d | 0d | PLUMBING [500.4 h]; Cost |  |  | S08PA22005C0 | GA | C | GL | RD | ME | 220 | 05 | PP | BILL 6 | B06 | S1 | 1F | R00 | ACF04 | 220 |  |  |  |  |  |  |  |  |  |  |  | MEP | M1F |  | 65 | 1S |  |
| GGLRD23017C0 |  | GA-GL ; 1st Fix, Inst of CHW pipe (Recept Desk,Hall) | 54d | 2011-11-23 | 2012-01-29 | GGLRD21111C0 SS+12d, GGLRD23001C0 |  |  |  |  | 48.8d | 0d | MECHANICAL [1650 h]; Cost |  |  | S08PA23017C0 | GA | C | GL | RD | ME | 230 | 17 | PP | BILL 6 | B06 | S1 | 1F | R00 | ACF04 | 230 |  |  |  |  |  |  |  | 10452.61 |  |  |  | MEP | M1F |  | 85 | 1S |  |
| GGLRD23023C0 |  | GA-GL ; 1st Fix, Inst of Main Ducting (Recept Desk,Hall) | 54d | 2011-12-04 | 2012-02-07 | GGLRD23001C0, GGLRD23017C0 SS+7d |  |  |  |  | 48.8d | 0d | MECHANICAL [7458 h]; Cost |  |  | S08PA23023C0 | GA | C | GL | RD | ME | 230 | 23 | PP | BILL 6 | B06 | S1 | 1F | R00 | ACF04 | 230 |  |  |  |  |  |  |  |  |  |  |  | MEP | M1F |  | 75 | 1S |  |
| GGLRD01005C0 |  | GA-GL ; 2nd, Wall Inspection by Consultant (Recept Desk,Hall) | 0d | 2011-12-07 | 2011-12-07 | GGLRD22011C0, GGLRD26009C0 |  |  |  |  | 69.6d | 41.6d | Cost |  |  | S08PA01005C0 | GA | C | GL | RD | ME | 010 | 05 | PP | BILL 6 | B06 | S1 | WI | R00 | ACF07 | 010 |  |  |  |  |  |  |  |  |  |  |  | MEP |  |  |  | 2n |  |
| GGLRD27001C0 |  | GA-GL ; 1st Fix, Wiring/ Cabling work (Recept Desk,Hall) | 54d | 2012-01-04 | 2012-03-07 | GGLRD26001C0, GGLRD26013C0, GGLRD27010C0 |  |  |  |  | 77d | 49d | ELECTRICAL [242.4 h]; Cost |  |  | S08PA27001C0 | GA | C | GL | RD | ME | 270 | 01 | PP | BILL 6 | B06 | S1 | 1F | R00 | ACF04 | 270 |  |  |  |  |  |  |  | 15113.48 |  |  |  | MEP | M1F |  | 65 | 1S |  |
| GGLRD09205C0 |  | GA-GL ; Partitions Closing (Recept Desk,Hall) | 48d | 2012-01-26 | 2012-03-22 | GAFOA09208C1 FF, GGLRD01005C0, GGLRD09203C0, GGLRD22005C0, GGLRD22019C0, GGLRD08103C0 FF |  |  |  |  | 28d | 0d | PARTITIONS [331 m]; PARTITIONS [1935 h]; Cost |  |  | S08PA09205C0 | GA | C | GL | RD | PT | 092 | 05 | PP | BILL 6 | B06 | S1 | FF | R00 | ACF06 | 092 |  |  |  |  | 315 | 946 |  |  |  |  |  | GP | P2F |  |  |  |  |
| GGLRD23009C0 |  | GA-GL ; 2nd Fix, Inst of VAV'S CHW connection (Recept Desk,Hall) | 48d | 2012-01-29 | 2012-03-26 | GGLRD23017C0 |  |  |  |  | 49.8d | 1d | MECHANICAL [788.4 h]; Cost |  |  | S08PA23009C0 | GA | C | GL | RD | ME | 230 | 09 | PP | BILL 6 | B06 | S1 | 2F | R00 | ACF07 | 230 |  |  |  |  |  |  |  |  |  |  |  | MEP |  |  | 20 | 2n |  |
| GGLRD23008C0 |  | GA-GL ; 1st Fix, Inst of VCD's/FD's (Recept Desk,Hall) | 54d | 2012-02-07 | 2012-04-10 | GGLRD23023C0 |  |  |  |  | 48.8d | 20.8d | MECHANICAL [673.2 h]; Cost |  |  | S08PA23008C0 | GA | C | GL | RD | ME | 230 | 08 | PP | BILL 6 | B06 | S1 | 1F | R00 | ACF04 | 230 |  |  |  |  |  |  |  |  |  |  |  | MEP | M1F |  |  | 1S |  |
| GGLRD23015C0 |  | GA-GL ; 2nd Fix, Insulation of CHW pipe & Duct (Recept Desk,Hall) | 54d | 2012-02-07 | 2012-04-10 | GGLRD23009C0 SS+6d, GGLRD23017C0, GGLRD23023C0 |  |  |  |  | 48.8d | 20.8d | MECHANICAL [1699.2 h]; Cost |  |  | S08PA23015C0 | GA | C | GL | RD | ME | 230 | 15 | PP | BILL 6 | B06 | S1 | 2F | R00 | ACF07 | 230 |  |  |  |  |  |  |  |  |  |  |  | MEP |  |  |  | 2n |  |
| GGLRD09901C0 |  | GA-GL ; Wall Prime & 1st coat (Recept Desk,Hall) | 36d | 2012-03-24 | 2012-05-03 | GGLRD09205C0 |  |  |  |  | 28d | 0d | WALL PAINT [129 h]; WALL PAINT [159 m2]; Cost |  |  | S08PA09901C0 | GA | C | GL | RD | PA | 099 | 01 | PP | BILL 6 | B06 | S1 | 01 | R00 | ACF06 | 099 |  |  |  |  | 328 | 956 |  |  |  |  |  |  |  |  |  |  |  |
| GGLRD26005C0 |  | GA-GL ; 2nd Fix, Wiring for Power/Lighting/Emergency (Recept Desk,Hall) | 48d | 2012-03-24 | 2012-05-17 | GGLRD09205C0 |  |  |  |  | 142d | 0d | ELECTRICAL [242.4 h]; Cost |  |  | S08PA26005C0 | GA | C | GL | RD | ME | 260 | 05 | PP | BILL 6 | B06 | S1 | 2F | R00 | ACF07 | 260 |  |  |  |  |  |  |  |  |  |  |  | MEP |  |  |  | 2n |  |
| GGLRD26007C0 |  | GA-GL ; 2nd Fix, Cable Pulling (Recept Desk,Hall) | 48d | 2012-03-24 | 2012-05-17 | GGLRD09201C0, GGLRD09205C0 |  |  |  |  | 172d | 144d | ELECTRICAL [1117.2 h]; Cost |  |  | S08PA26007C0 | GA | C | GL | RD | ME | 260 | 07 | PP | BILL 6 | B06 | S1 | 2F | R00 | ACF07 | 260 |  |  |  |  |  |  |  | 7501.7 |  |  |  | MEP |  |  | 10 | 2n |  |
| GGLRD26011C0 |  | GA-GL ; 2nd Fix, Inst of Equipment (DB) (Recept Desk,Hall) | 60d | 2012-03-24 | 2012-05-31 | GGLRD09205C0 |  |  |  |  | 40d | 12d | ELECTRICAL [524.4 h]; Cost |  |  | S08PA26011C0 | GA | C | GL | RD | ME | 260 | 11 | PP | BILL 6 | B06 | S1 | 2F | R00 | ACF04 | 260 |  |  |  |  |  |  |  |  |  |  |  | MEP |  |  |  | 2n | E |
| GGLRD26053C0 |  | GA-GL ; 2nd Fix, Wiring / Cabling (Recept Desk,Hall) | 48d | 2012-03-24 | 2012-05-17 | GGLRD09203C0, GGLRD09205C0 |  |  |  |  | 172d | 144d | ELECTRICAL [242.4 h]; Cost |  |  | S08PA26053C0 | GA | C | GL | RD | ME | 260 | 53 | PP | BILL 6 | B06 | S1 | 2F | R00 | ACF07 | 260 |  |  |  |  | 389 | 977 |  |  |  |  |  | MEP |  |  |  | 2n |  |
| GGLRD05501C0 |  | GA-GL ; Handrails & balustrade (Recept Desk,Hall) | 36d | 2012-05-05 | 2012-06-14 | GGLRD09901C0 |  |  |  |  | 197d | 169d | SECONDARY STEEL [461 h]; Cost |  |  | S08PA05501C0 | GA | C | GL | RD | SW | 055 | 01 | PP | BILL 6 | B06 | S1 | 01 | R00 | ACF03 | a |  |  |  |  |  |  |  |  |  |  |  |  |  |  |  |  |  |
| GGLRD09501C0 |  | GA-GL ; Ceiling Grid and Service Tile (Recept Desk,Hall) | 36d | 2012-05-05 | 2012-06-14 | GGLRD09205C0 SS+15d, GGLRD21117C0, GGLRD23008C0, GGLRD23009C0, GGLRD23015C0, GGLRD27001C0, GGLRD09901C0 |  |  |  |  | 28d | 0d | CEILING GRID FOR GYPSUM [370.12 h]; CEILING GRID FOR GYPSUM [31.48 m2]; Cost |  |  | S08PA09501C0 | GA | C | GL | RD | CE | 095 | 01 | PP | BILL 6 | B06 | S1 | 01 | R00 | ACF06 | 095 |  |  |  |  | 323 | 952 |  |  |  |  |  |  |  |  |  |  |  |
| GGLRD11011C0 |  | GA-GL ; RECEPT Desk installation (Recept Desk,Hall) | 24d | 2012-05-05 | 2012-05-31 | GGLRD09901C0 |  |  |  |  | 209d | 181d | FF&E [52 h]; FF&E [17.45 no]; Cost |  |  | S08PA09201C0 | GA | C | GL | RD | FI | 110 | 11 | PP | BILL 6 | B06 | S1 | 10 | R00 | ACF08 | f |  |  |  |  | 313 | 944 |  |  |  |  |  |  |  |  |  |  |  |
| GGLRD26015C0 |  | GA-GL ; Final Fix, Termination & Gladding of Cables (Recept Desk,Hall) | 30d | 2012-05-19 | 2012-06-23 | GGLRD26005C0 |  |  |  |  | 142d | 48d | ELECTRICAL [62.4 h]; Cost |  |  | S08PA26015C0 | GA | C | GL | RD | ME | 260 | 15 | PP | BILL 6 | B06 | S1 | FF | R00 | ACF07 | 260 |  |  |  |  |  |  |  |  |  |  |  | MEP |  |  |  | FF |  |
| GGLRD09601C0 |  | GA-GL ; Flooring (stone) (Recept Desk,Hall) | 78d | 2012-06-17 | 2012-09-17 | GGLRD09205C0, GGLCO04404C0, GGLPA09601C0 SS+18d, GGLRD09501C0, A10410 |  |  |  |  | 29.5d | 0d | RUBBER FLOOR [24 h]; RUBBER FLOOR [57 m2]; Cost |  |  | S08PA09601C0 | GA | C | GL | RD | FF | 096 | 01 | PP | BILL 6 | B06 | S1 | 03 | R00 | ACF06 | ST |  |  |  |  | 326 | 955 |  |  |  |  |  |  |  |  |  |  |  |
| GGLRD09701C0 |  | GA-GL ; Wall finishes (ST, WD, WC) (Recept Desk,Hall) | 60d | 2012-06-17 | 2012-08-27 | GGLRD26011C0, GGLRD27020C0 FF, GGLCO04404C0 |  |  |  |  | 28d | 0d | ASSORTED WALL FINISH [395 h]; ASSORTED WALL FINISH [453 m2]; Cost |  |  | S08PA09701C0 | GA | C | GL | RD | WF | 097 | 01 | PP | BILL 6 | B06 | S1 | 01 | R00 | ACF06 | 097 |  |  |  |  | 105 | 1002 |  |  |  |  |  |  |  |  |  |  |  |
| GGLRD09905C0 |  | GA-GL ; Ceiling Prime & 1st coat (Recept Desk,Hall) | 36d | 2012-06-17 | 2012-07-28 | GGLRD09501C0 |  |  |  |  | 125d | 0d | CEILING PAINT [57 h]; CEILING PAINT [70 m2]; Cost |  |  | S08PA09905C0 | GA | C | GL | RD | PA | 099 | 05 | PP | BILL 6 | B06 | S1 | 01 | R00 | ACF06 | 099 |  |  |  |  | 330 | 958 |  |  |  |  |  |  |  |  |  |  |  |
| GGLRD21113C0 |  | GA-GL ; Final Fix, Inst of Sprinklers head/ Extinguisher (Recept Desk,Hall) | 30d | 2012-06-17 | 2012-07-21 | GGLRD09501C0, GGLRD21115C0 SS |  |  |  |  | 118d | 24d | MECHANICAL [297.6 h]; Cost |  |  | S08PA21113C0 | GA | C | GL | RD | ME | 211 | 13 | PP | BILL 6 | B06 | S1 | FF | R00 | ACF07 | 211 |  |  |  |  |  |  |  |  |  |  |  | MEP |  |  |  | FF |  |
| GGLRD21115C0 |  | GA-GL ; 2nd Fix, Inst of Sprinkler droppers (Recept Desk,Hall) | 48d | 2012-06-17 | 2012-08-11 | GGLRD09501C0 |  |  |  |  | 100d | 0d | MECHANICAL [1734 h]; Cost |  |  | S08PA21115C0 | GA | C | GL | RD | ME | 211 | 15 | PP | BILL 6 | B06 | S1 | 2F | R00 | ACF07 | 211 |  |  |  |  |  |  |  |  |  |  |  | MEP |  |  |  | 2n |  |
| GGLRD23021C0 |  | GA-GL ; 2nd Fix, Inst of Flexible Duct & Plenum boxes (Recept Desk,Hall) | 54d | 2012-06-17 | 2012-08-18 | GGLRD09205C0, GGLRD09501C0 |  |  |  |  | 94d | 0d | MECHANICAL [1962 h]; Cost |  |  | S08PA23021C0 | GA | C | GL | RD | ME | 230 | 21 | PP | BILL 6 | B06 | S1 | 2F | R00 | ACF07 | 230 |  |  |  |  |  |  |  |  |  |  |  | MEP |  |  |  | 2n |  |
| GGLRD26017C0 |  | GA-GL ; Final Fix, Inst of Ceiling rose (Recept Desk,Hall) | 30d | 2012-06-17 | 2012-07-21 | GGLRD09501C0 |  |  |  |  | 94d | 0d | ELECTRICAL [34.8 h]; Cost |  |  | S08PA26017C0 | GA | C | GL | RD | ME | 260 | 17 | PP | BILL 6 | B06 | S1 | FF | R00 | ACF07 | 260 |  |  |  |  |  |  |  |  |  |  |  | MEP |  |  |  | FF |  |
| GGLRD27002C0 |  | GA-GL ; 2nd Fix, Wiring Droppers (Recept Desk,Hall) | 48d | 2012-06-17 | 2012-08-11 | GGLRD09501C0 |  |  |  |  | 100d | 0d | ELECTRICAL [242.4 h]; Cost |  |  | S08PA27002C0 | GA | C | GL | RD | ME | 270 | 02 | PP | BILL 6 | B06 | S1 | 2F | R00 | ACF07 | 270 |  |  |  |  |  |  |  |  |  |  |  | MEP |  |  |  | 2n |  |
| GGLRD27020C0 |  | GA-GL ; 2nd Fix, Inst of ELV Equipment (Panels) (Recept Desk,Hall) | 60d | 2012-06-17 | 2012-08-27 | GGLRD09205C0, GGLRD09501C0 |  |  |  |  | 28d | 0d | ELECTRICAL [1618.8 h]; Cost |  |  | S08PA27020C0 | GA | C | GL | RD | ME | 270 | 20 | PP | BILL 6 | B06 | S1 | 2F | R00 | ACF04 | 270 |  |  |  |  |  |  |  |  |  |  |  | MEP |  |  |  | 2n | E |
| GGLRD27030C0 |  | GA-GL ; Final Fix, Inst of ELV devise (Detector/Speaker) (Recept Desk,Hall) | 30d | 2012-06-17 | 2012-07-21 | GGLRD09501C0, GGLRD27002C0 SS |  |  |  |  | 118d | 24d | ELECTRICAL [710.4 h]; Cost |  |  | S08PA27030C0 | GA | C | GL | RD | ME | 270 | 30 | PP | BILL 6 | B06 | S1 | FF | R00 | ACF07 | 270 |  |  |  |  |  |  |  |  |  |  |  | MEP |  |  |  | FF |  |
| GGLRD23019C0 |  | GA-GL ; Final Fix, Inst of Grilles & Diffusers (Recept Desk,Hall) | 36d | 2012-06-24 | 2012-08-04 | GGLRD09501C0, GGLRD23021C0 SS+6d |  |  |  |  | 106d | 12d | MECHANICAL [1030.8 h]; Cost |  |  | S08PA23019C0 | GA | C | GL | RD | ME | 230 | 19 | PP | BILL 6 | B06 | S1 | FF | R00 | ACF07 | 230 |  |  |  |  |  |  |  |  |  |  |  | MEP |  |  |  | FF |  |
| GGLRD26003C0 |  | GA-GL ; Final Fix, Inst of Light fittings (Recept Desk,Hall) | 48d | 2012-06-24 | 2012-08-18 | GGLRD09501C0, GGLRD26017C0 SS+6d |  |  |  |  | 94d | 0d | ELECTRICAL [7791.6 h]; Cost |  |  | S08PA26003C0 | GA | C | GL | RD | ME | 260 | 03 | PP | BILL 6 | B06 | S1 | FF | R00 | ACF07 | 260 |  |  |  |  |  |  |  |  |  |  |  | MEP |  |  |  | FF |  |
| GGLRD09903C0 |  | GA-GL ; Wall Final Paint (Recept Desk,Hall) | 36d | 2012-07-29 | 2012-09-10 | GGLRD09901C0, GGLRD09905C0 |  |  |  |  | 125d | 97d | WALL PAINT [69 h]; WALL PAINT [86 m2]; Cost |  |  | S08PA09903C0 | GA | C | GL | RD | PA | 099 | 03 | PP | BILL 6 | B06 | S1 | 02 | R00 | ACF06 | 099 |  |  |  |  | 329 | 957 |  |  |  |  |  |  |  |  |  |  |  |
| GGLRD01006C0 |  | GA-GL ; 2nd, Ceiling Inspection by Consultants (Recept Desk,Hall) | 0d | 2012-08-21 | 2012-08-21 | GGLRD21115C0, GGLRD23009C0, GGLRD23015C0, GGLRD27002C0, GGLRD09501C0, GGLRD21113C0, GGLRD23019C0, GGLRD26003C0, GGLRD26017C0, GGLRD27030C0, GGLRD26015C0 |  |  |  |  | 94d | 66d | Cost |  |  | S08PA01006C0 | GA | C | GL | RD | ME | 010 | 06 | PP | BILL 6 | B06 | S1 | CI | R00 | ACF07 | 010 |  |  |  |  |  |  |  |  |  |  |  | MEP |  |  |  | 2n |  |
| GGLRD11009C0 |  | GA-GL ; Signage (Recept Desk,Hall) | 13.75d | 2012-08-28 | 2012-09-12 | GGLRD09701C0 |  |  |  |  | 123.25d | 95.25d | SIGNAGES [24 h]; SIGNAGES [23.69 no]; Cost |  |  | S08PA11009C0 | GA | C | GL | RD | SA | 110 | 09 | PP | BILL 6 | B06 | S1 | 09 | R00 | ACF08 | c |  |  |  |  | 322 | 951 |  |  |  |  |  |  |  | 08 |  |  |  |
| GGLRD06101C10 |  | GA-GL ; Wood / caseworks (Recept Desk,Hall) | 40.5d | 2012-09-18 | 2012-11-06 | GGLCO04404C0, GGLRD09501C0, GGLRD09901C0, CAFWA00113M0 FS+12d, GGLRD09601C0 |  |  |  |  | 29.5d | 1.5d | Labor General [1 h]; Cost |  |  | DP2KS06101C0 | GA | C | P2 | RD | WO | 061 | 01 | PP | BILL 6 | B06 | S1 | WW | R00 | ACF06 | 061 |  |  |  |  | 332 | 960 |  |  |  |  |  |  |  |  |  |  |  |
| GGLRD08107C0 |  | GA-GL ; Doors (Recept Desk,Hall) | 36d | 2012-09-18 | 2012-10-31 | GGLRD08103C0, GGLRD09901C0, GGLRD09601C0 |  |  |  |  | 63d | 0d | ASSORTED DOORS [180 h]; ASSORTED DOORS [18 no]; Cost |  |  | S08PA08107C0 | GA | C | GL | RD | DO | 081 | 07 | PP | BILL 6 | B06 | S1 | DR | R00 | ACF06 | 081 |  |  |  |  | 317 | 948 |  |  |  |  |  |  |  | 08 |  |  |  |
| GGLRD08709C0 |  | GA-GL ; Ironmongery (Recept Desk,Hall) | 20d | 2012-11-01 | 2012-11-25 | GGLRD08107C0 |  |  |  |  | 63d | 35d | IRONMONGERY [130 h]; IRONMONGERY [13 no]; Cost |  |  | S08PA08709C0 | GA | C | GL | RD | DO | 087 | 09 | PP | BILL 6 | B06 | S1 | IM | R00 | ACF06 | 087 |  |  |  |  | 322 | 951 |  |  |  |  |  |  |  | 08 |  |  |  |
| GGFRG09673C1 |  | GA-GF, Carpet Tile Finish (Conference, Prayer Room, Offices) | 0d | 2012-11-01 | 2012-11-01 | GGLPA09907C0 SS, GGLPA09903C0 SS |  |  |  |  | 82.8d | 54.8d | Cost |  |  |  | GA | C | GL | RG | FF | 096 |  |  |  | B06 |  |  | R00 | ACF06 | CPT |  |  |  |  |  |  |  |  |  |  |  | CPT |  |  |  |  |  |
| GGLRD09503C0 |  | GA-GL ; Ceiling closure - ACT/Gypsum (Recept Desk,Hall) | 22d | 2012-11-08 | 2012-12-05 | GAFOA09507C1, GGLRD01006C0, GGLRD21115C0, GGLRD26005C0, GGLRD27001C0, GGLRD27002C0, GGLRD06101C10, GGLRD09701C0, GGLRD23021C0, GGLRD26053C0, GGLRD26007C0, GV10GL10903R2 |  |  |  |  | 28d | 0d | ASSORTED CEILING FINISH [207.87 h]; CEILING GYPSUM [10.25 h]; ASSORTED CEILING FINISH [338 m2]; CEILING GYPSUM [31 m2]; Cost |  |  | S08PA09503C0 | GA | C | GL | RD | CE | 095 | 03 | PP | BILL 6 | B06 | S1 | 02 | R00 | ACF06 | 095 |  |  |  |  | 324 | 953 |  |  |  |  |  |  |  |  |  |  |  |
| GGLRD09907C0 |  | GA-GL ; Ceiling Final paint (Recept Desk,Hall) | 18d | 2012-12-06 | 2012-12-26 | GGLRD09601C0, GGLRD09905C0, GGLRD09503C0 |  |  |  |  | 37d | 9d | CEILING PAINT [31 h]; CEILING PAINT [38 m2]; Cost |  |  | S08PA09907C0 | GA | C | GL | RD | PA | 099 | 07 | PP | BILL 6 | B06 | S1 | 02 | R00 | ACF06 | 099 |  |  |  |  | 331 | 959 |  |  |  |  |  |  |  |  |  |  |  |
| GGLRD11010C0 |  | GA-GL ; Ceiling Pendent Shandlier installation (Recept Desk,Hall) | 24d | 2012-12-06 | 2013-01-03 | GGLRD09503C0 |  |  |  |  | 31d | 3d | Labor General [1 h]; Cost |  |  | S08PA09201C0 | GA | C | GL | RD | FI | 110 | 10 | PP | BILL 6 | B06 | S1 | 01 | R00 | ACF08 | e |  |  |  |  | 313 | 944 |  |  |  |  |  |  |  |  |  |  |  |
| GGLRD26019C0 |  | GA-GL ; Final Fix, Inst of Switch/Sockets (Recept Desk,Hall) | 18d | 2012-12-06 | 2012-12-26 | GGLRD09901C0, GGLRD09503C0 |  |  |  |  | 28d | 0d | ELECTRICAL [132 h]; Cost |  |  | S08PA26019C0 | GA | C | GL | RD | ME | 260 | 19 | PP | BILL 6 | B06 | S1 | FF | R00 | ACF07 | 260 |  |  |  |  |  |  |  |  |  |  |  | MEP |  |  |  | FF |  |

| ID | WBS | Activity | Duration | Start | Finish | Predecessors | Complete | Remaining | Planned start | Planned finish | Total float | Free float | Resources | change id | CCAD BUILDING(SET) | CCAD PHASE(SET) | CCAD FLOOR(SET) | CCAD ZONE(SET) | CCAD WORK(SET) | CCAD SECTION(SET) | CCAD SERIAL No.(SET) | CCAD RESPONSIBILITY(SET) | CCAD CBS(SET) | CCAD BILL(SET) | CCAD HANDOVER(SET) | CCAD TAG(SET) | CCAD REV(SET) | CCADACF (SET) | CCAD SSCF | Change Order # | NEW ACTIVITY ID | RENZ % COMPLETE | Claimed This Month | Act Selector % | CCAD DIVISION(SET) | July2011 Target% Complete | CCAD SUB ZONE MEP(SET) | CCAD MEQ | IDDD |
| --- | --- | --- | --- | --- | --- | --- | --- | --- | --- | --- | --- | --- | --- | --- | --- | --- | --- | --- | --- | --- | --- | --- | --- | --- | --- | --- | --- | --- | --- | --- | --- | --- | --- | --- | --- | --- | --- | --- | --- |
|  | 10 | **Precommissioning Tesing & snagging (Recept , Hall Way)** |  | 2012-12-27 | 2013-01-30 |  |  |  |  |  |  |  |  |  |  |  |  |  |  |  |  |  |  |  |  |  |  |  |  |  |  |  |  |  |  |  |  |  |  |
| GGLTS01801C0 |  | GA-GL ; MEP de-snag, FIREM sign-off | 9d | 2012-12-27 | 2013-01-07 | GGLRD26015C0, GGLRD21113C0, GGLRD23019C0, GGLRD26017C0, GGLRD26003C0, GGLRD27030C0, GGLRD26019C0, GGLRD09503C0 |  |  |  |  | 28d | 0d | TESTING & COMMISSIONING [2040 h]; Cost | GGLTS01801C0 | GA | C | GL | TS | SC | 018 | 01 | PP | BILL 6 | B06 | S1 | 01 | R00 | ACF07 | 018 |  |  |  |  |  |  |  |  |  |  |
| GGLTS01805C0 |  | GA-GL ; Touch-up & Clean / JV inspection /CIR /De-snag | 18d | 2013-01-08 | 2013-01-29 | GGLCO04401C0, GGLRD06101C10, GGLRD08709C0, GGLRD09601C0, GGLRD09701C0, GGLRD09903C0, GGLRD09907C0, GGLRD11009C0, GGLRD11010C0, GGLRD11011C0, GGLTS01801C0, GGLTS01806C0, GGLRD05501C0, GGFRG09673C1 |  |  |  |  | 28d | 0d | TESTING & COMMISSIONING [128 h]; Cost | GGLTS01802C0 | GA | C | GL | TS | SC | 018 | 02 | PP | BILL 6 | B06 | S1 | 02 | R00 | ACF07 | 018 |  |  |  |  |  |  |  |  |  |  |
| GGLTS01807C0 |  | GA-GL ; Consultant's final de-snag inspection | 0d | 2013-01-30 | 2013-01-30 | GGLTS01805C0 |  |  |  |  | 28d | 0d | Cost | GGLTS01803C0 | GA | C | GL | TS | SC | 018 | 03 | PP | BILL 6 | B06 | S1 | 03 | R00 | ACF07 | 018 |  |  |  |  |  |  |  |  |  |  |
|  | CCA R03 00D.GA ADD | **Mezzanin Level** |  | 2011-05-14 | 2013-01-08 |  |  |  |  |  |  |  |  |  |  |  |  |  |  |  |  |  |  |  |  |  |  |  |  |  |  |  |  |  |  |  |  |  |  |
|  | P3 | **Level Podium 3** |  | 2012-07-29 | 2012-09-11 |  |  |  |  |  |  |  |  |  |  |  |  |  |  |  |  |  |  |  |  |  |  |  |  |  |  |  |  |  |  |  |  |  |  |
|  | 02 | **Public Area ( Elev.Lobby & Corridors )** |  | 2012-07-29 | 2012-09-11 |  |  |  |  |  |  |  |  |  |  |  |  |  |  |  |  |  |  |  |  |  |  |  |  |  |  |  |  |  |  |  |  |  |  |
| GP3AB11003C30 |  | GA-P3 ; Kitchen Equipment Installation (Elev.Lobby&Corridors) | 36d | 2012-07-29 | 2012-09-11 | GP3PA09601C0, GP3PA09602C0 |  |  |  |  | 128.29d | 16d | FF&E; Cost | S08PA09201C0 | GA | C | P3 | AB | EQ | 110 | 03 | PP | BILL 6 | B06 | S1 | 06 | R00 | ACF08 | KE | 313 | 944 |  |  |  |  |  |  |  |  |
|  | 2 | **(New WBS)-1** |  |  |  |  |  |  |  |  |  |  |  |  |  |  |  |  |  |  |  |  |  |  |  |  |  |  |  |  |  |  |  |  |  |  |  |  |  |
|  | GL | **Ground Mezzanine Level** |  | 2011-05-14 | 2013-01-08 |  |  |  |  |  |  |  |  |  |  |  |  |  |  |  |  |  |  |  |  |  |  |  |  |  |  |  |  |  |  |  |  |  |  |
|  | 02 | **TR Room** |  | 2011-05-23 | 2012-08-25 |  |  |  |  |  |  |  |  |  |  |  |  |  |  |  |  |  |  |  |  |  |  |  |  |  |  |  |  |  |  |  |  |  |  |
| GGLTR09201C10 |  | GA-GL MZ ; Metal Studs (TR RM) | 18d | 2011-05-23 A | 2011-10-30 | GGLPA09201C10 | 40% | 10.8d | 2011-08-08 | 2011-08-28 | 110.15d | 0d | PARTITIONS [30 h]; PARTITIONS - Metal Studs [5 m]; Cost | GGLTR09201C0 | GA | C | GL | TR | PT | 092 | 01 | PP | BILL 6 | B06 | S1 | 1F | R00 | ACF06 | 092 | 313 | 885 | 10 | 197.56 | PMS |  |  |  |  |  |
| GGLTR09203C10 |  | GA-GL MZ ; Partitions 1st face (TR RM) | 24d | 2011-06-15 A | 2011-11-16 | GGLTR09201C10 | 50% | 12d | 2011-07-21 | 2011-08-17 | 117.22d | 33.42d | PARTITIONS; Cost | GGLTR09203C0 | GA | C | GL | TR | PT | 092 | 03 | PP | BILL 6 | B06 | S1 | 2F | R00 | ACF06 | 092 | 314 | 886 |  | 138.29 | P1F |  |  |  |  |  |
| GGLTR08101C10 |  | GA-GL MZ ; Door Frames (TR RM) | 18d | 2011-07-10 A | 2012-02-02 | GGLTR09201C10, GNHE08101C0 FS+142d | 5% | 17.1d | 2011-08-28 | 2011-09-20 | 83.8d | 0d | ASSORTED DOORS [1 h]; Cost | GGLTR08101C0 | GA | C | GL | TR | DO | 081 | 01 | PP | BILL 6 | B06 | S1 | DF | R00 | ACF06 | 081 | 316 | 20001090 |  |  |  | 08 |  |  |  |  |
| GGLTR26026C10 |  | GA-GL MZ ; 2nd Fix, Conduit (TR RM) | 29.88d | 2011-10-18 | 2011-11-24 | GGLTR09201C10 SS+6d |  |  |  |  | 110.15d | 0d | ELECTRICAL; Cost | GGLTR26026C0 | GA | C | GL | TR | ME | 260 | 26 | PP | BILL 6 | B06 | S1 | 2F | R00 | ACF07 | 260 |  |  |  |  |  |  | 15 | 2n |  |  |
| GGLTR01005C10 |  | GA-GL MZ ; 2nd, Wall Inspection by Consultant (TR RM) | 0d | 2011-11-24 | 2011-11-24 | GGLTR26026C10 |  |  |  |  | 110.15d | 26.35d | Cost | GGLTR01005C0 | GA | C | GL | TR | ME | 010 | 05 | PP | BILL 6 | B06 | S1 | WI | R00 | ACF07 | 010 |  |  |  |  |  |  |  | 2n |  |  |
| GGLTR09205C10 |  | GA-GL MZ ; Partitions Closing (TR RM) | 29.88d | 2011-12-28 | 2012-02-02 | GGLTR01005C10, GGLTR09201C10, GGLTR09203C10, GGLTR08101C10 FF |  |  |  |  | 83.8d | 0d | PARTITIONS; Cost | GGLTR09205C0 | GA | C | GL | TR | PT | 092 | 05 | PP | BILL 6 | B06 | S1 | FF | R00 | ACF06 | 092 | 315 | 887 |  |  | P2F |  |  |  |  |  |
| GGLTR09901C10 |  | GA-GL MZ ; Wall Prime & 1st coat (TR RM) | 18d | 2012-02-02 | 2012-02-25 | GGLTR09205C10 |  |  |  |  | 83.8d | 0d | WALL PAINT; Cost | GGLTR09901C0 | GA | C | GL | TR | PA | 099 | 01 | PP | BILL 6 | B06 | S1 | 01 | R00 | ACF06 | 099 | 360 | 20001110 |  |  |  |  |  |  |  |  |
| GGLTR23009C10 |  | GA-GL MZ ; 2nd Fix, Inst of VAV'S CHW connection (TR RM) | 30d | 2012-02-02 | 2012-03-10 | GGLTR09205C10 |  |  |  |  | 113.8d | 0d | MECHANICAL; Cost | GGLTR23009C0 | GA | C | GL | TR | ME | 230 | 09 | PP | BILL 6 | B06 | S1 | 2F | R00 | ACF07 | 230 |  |  |  |  |  |  | 45 | 2n |  |  |
| GGLTR23011C10 |  | GA-GL MZ ; 2nd Fix, Inst of VCD's/FD's (TR RM) | 30d | 2012-02-02 | 2012-03-10 | GGLTR09205C10 |  |  |  |  | 113.8d | 0d | MECHANICAL; Cost | GGLTR23011C0 | GA | C | GL | TR | ME | 230 | 11 | PP | BILL 6 | B06 | S1 | 2F | R00 | ACF07 | 230 |  |  |  |  |  |  | 40 | 2n |  |  |
| GGLTR26007C10 |  | GA-GL MZ ; 2nd Fix, Cable Pulling (TR RM) | 30d | 2012-02-02 | 2012-03-10 | GGLTR09203C10, GGLTR09205C10 |  |  |  |  | 143.8d | 60d | ELECTRICAL; Cost | GGLTR26007C0 | GA | C | GL | TR | ME | 260 | 07 | PP | BILL 6 | B06 | S1 | 2F | R00 | ACF07 | 260 |  |  |  |  |  |  | 25 | 2n |  |  |
| GGLTR26009C10 |  | GA-GL MZ ; 2nd Fix, Inst of Equipment (DB, TR, SG,BUS) (TR RM) | 30d | 2012-02-02 | 2012-03-10 | GGLTR09205C10 |  |  |  |  | 125.8d | 0d | ELECTRICAL; Cost | GGLTR26009C0 | GA | C | GL | TR | ME | 260 | 09 | PP | BILL 6 | B06 | S1 | 2F | R00 | ACF04 | 260 |  |  |  |  |  |  |  | 2n | E |  |
| GGLTR26027C10 |  | GA-GL MZ ; 2nd Fix, Wiring / Cabling (TR RM) | 30d | 2012-02-02 | 2012-03-10 | GGLTR09205C10 |  |  |  |  | 143.8d | 60d | ELECTRICAL; Cost | GGLTR26027C0 | GA | C | GL | TR | ME | 260 | 27 | PP | BILL 6 | B06 | S1 | 2F | R00 | ACF07 | 260 | 417 | 1318 |  |  |  |  | 30 | 2n |  |  |
| GGLTR09501C10 |  | GA-GL MZ ; Ceiling Grid and Service Tile (TR RM) | 24d | 2012-02-25 | 2012-03-24 | GGLTR09205C10 SS+15d, GGLTR09901C10 |  |  |  |  | 83.8d | 0d | CEILING GRID FOR GYPSUM; Cost | GGLTR09501C0 | GA | C | GL | TR | CE | 095 | 01 | PP | BILL 6 | B06 | S1 | 01 | R00 | ACF06 | 095 | 336 | 1327 |  |  |  |  |  |  |  | 1 |
| GGLTR09903C10 |  | GA-GL MZ ; Wall - Final Paint (TR RM) | 12d | 2012-02-25 | 2012-03-10 | GGLTR09901C10 |  |  |  |  | 184.15d | 100.35d | WALL PAINT; Cost | GGLTR09903C0 | GA | C | GL | TR | PA | 099 | 03 | PP | BILL 6 | B06 | S1 | 02 | R00 | ACF06 | 099 | 361 | 1312 |  |  |  |  |  |  |  |  |
| GGLTR23013C10 |  | GA-GL MZ ; 2nd Fix, Insulation of CHW pipe & Duct (TR RM) | 30d | 2012-03-10 | 2012-04-14 | GGLTR23009C10, GGLTR23011C10 |  |  |  |  | 113.8d | 30d | MECHANICAL; Cost | GGLTR23013C0 | GA | C | GL | TR | ME | 230 | 13 | PP | BILL 6 | B06 | S1 | 2F | R00 | ACF07 | 230 |  |  |  |  |  |  |  | 2n |  |  |
| GGLTR26013C10 |  | GA-GL MZ ; Final Fix, Termination & Gladding of Cables (TR RM) | 18d | 2012-03-10 | 2012-03-31 | GGLTR26009C10 |  |  |  |  | 125.8d | 42d | ELECTRICAL; Cost | GGLTR26013C0 | GA | C | GL | TR | ME | 260 | 13 | PP | BILL 6 | B06 | S1 | FF | R00 | ACF07 | 260 |  |  |  |  |  |  |  | FF |  |  |
| GGLTR09601C10 |  | GA-GL MZ ; Floor Finishes (TR RM) | 11.78d | 2012-03-24 | 2012-04-05 | GGLTR09501C10 |  |  |  |  | 90.15d | 0d | ASSORTED FLOOR FINISH; Cost | GGLTR09601C0 | GA | C | GL | TR | FF | 096 | 01 | PP | BILL 6 | B06 | S1 | 01 | R00 | ACF06 | FF | 359 | 20001120 |  |  |  |  |  |  |  |  |
| GGLTR23003C10 |  | GA-GL MZ ; Final Fix, Inst of Grilles & Diffusers (TR RM) | 18d | 2012-03-24 | 2012-04-14 | GGLTR09501C10 |  |  |  |  | 113.8d | 30d | MECHANICAL; Cost | GGLTR23003C0 | GA | C | GL | TR | ME | 230 | 03 | PP | BILL 6 | B06 | S1 | FF | R00 | ACF07 | 230 |  |  |  |  |  |  |  | FF |  |  |
| GGLTR23023C10 |  | GA-GL MZ ; 2nd Fix, Flexible ducts (TR RM) | 30d | 2012-03-24 | 2012-04-28 | GGLTR09205C10, GGLTR09501C10 |  |  |  |  | 101.8d | 18d | MECHANICAL; Cost | GGLTR23023C0 | GA | C | GL | TR | ME | 230 | 23 | PP | BILL 6 | B06 | S1 | 2F | R00 | ACF07 | 230 | 412 | 20001140 |  |  |  |  | 40 | 2n |  |  |
| GGLTR23074C10 |  | GA-GL MZ ; Final Fix, Grilles, panels & diffusers (TR RM) | 18d | 2012-03-24 | 2012-04-14 | GGLTR09501C10 |  |  |  |  | 113.8d | 30d | MECHANICAL; Cost | GGLTR23074C0 | GA | C | GL | TR | ME | 230 | 74 | PP | BILL 6 | B06 | S1 | FF | R00 | ACF07 | 230 | 419 | 20001160 |  |  |  |  |  | FF |  |  |
| GGLTR26005C10 |  | GA-GL MZ ; 2nd Fix, Wiring for Power/Lighting/Emergency (TR RM) | 30d | 2012-03-24 | 2012-04-28 | GGLTR26026C10, GGLTR09501C10 |  |  |  |  | 101.8d | 18d | ELECTRICAL; Cost | GGLTR26005C0 | GA | C | GL | TR | ME | 260 | 05 | PP | BILL 6 | B06 | S1 | 2F | R00 | ACF07 | 260 |  |  |  |  |  |  | 30 | 2n |  |  |
| GGLTR26015C10 |  | GA-GL MZ ; Final Fix, Inst of Ceiling rose (TR RM) | 18d | 2012-03-24 | 2012-04-14 | GGLTR09501C10 |  |  |  |  | 113.8d | 30d | ELECTRICAL; Cost | GGLTR26015C0 | GA | C | GL | TR | ME | 260 | 15 | PP | BILL 6 | B06 | S1 | FF | R00 | ACF07 | 260 |  |  |  |  |  |  |  | FF |  |  |
| GGLTR26019C10 |  | GA-GL MZ ; Final Fix, Inst of Light fittings (TR RM) | 18d | 2012-03-24 | 2012-04-14 | GGLTR09501C10 |  |  |  |  | 113.8d | 30d | ELECTRICAL; Cost | GGLTR26019C0 | GA | C | GL | TR | ME | 260 | 19 | PP | BILL 6 | B06 | S1 | FF | R00 | ACF07 | 260 |  |  |  |  |  |  |  | FF |  |  |
| GGLTR26076C10 |  | GA-GL MZ ; Final Fix, Lighting fittings (TR RM) | 18d | 2012-03-24 | 2012-04-14 | GGLTR09501C10 |  |  |  |  | 113.8d | 30d | ELECTRICAL; Cost | GGLTR26076C0 | GA | C | GL | TR | ME | 260 | 76 | PP | BILL 6 | B06 | S1 | FF | R00 | ACF07 | 260 | 420 | 20001170 |  |  |  |  |  | FF |  |  |
| GGLTR27002C10 |  | GA-GL MZ ; 2nd Fix, Dressing of ELV panels (TR RM) | 30d | 2012-03-24 | 2012-04-28 | GGLTR09205C10, GGLTR27020C10 SS |  |  |  |  | 83.8d | 0d | ELECTRICAL; Cost | GGLTR27002C0 | GA | C | GL | TR | ME | 270 | 02 | PP | BILL 6 | B06 | S1 | 2F | R00 | ACF07 | 270 |  |  |  |  |  |  |  | 2n |  |  |
| GGLTR27020C10 |  | GA-GL MZ ; 2nd Fix, Inst of ELV Equipment (Panels) (TR RM) | 30d | 2012-03-24 | 2012-04-28 | GGLTR09205C10, GGLTR09501C10 |  |  |  |  | 83.8d | 0d | ELECTRICAL; Cost | GGLTR27020C0 | GA | C | GL | TR | ME | 270 | 20 | PP | BILL 6 | B06 | S1 | 2F | R00 | ACF04 | 270 |  |  |  |  |  |  |  | 2n | E |  |
| GGLTR08105C10 |  | GA-GL MZ ; Doors (TR RM) | 17.88d | 2012-04-05 | 2012-04-26 | GGLTR08101C10, GGLTR09901C10, GGLTR09601C10 |  |  |  |  | 130.62d | 0d | ASSORTED DOORS; Cost | GGLTR08105C0 | GA | C | GL | TR | DO | 081 | 05 | PP | BILL 6 | B06 | S1 | DR | R00 | ACF06 | 081 | 317 | 1325 |  |  |  | 08 |  |  |  |  |
| GGLTR21115C10 |  | GA-GL MZ ; 2nd Fix, Gaseous Fire Suppression (TR RM) | 29.88d | 2012-04-05 | 2012-05-10 | GGLTR09601C10 |  |  |  |  | 90.15d | 6.35d | MECHANICAL; Cost | GGLTR21115C0 | GA | C | GL | TR | ME | 211 | 15 | PP | BILL 6 | B06 | S1 | 2F | R00 | ACF07 | 211 | 411 | 20001130 |  |  |  |  |  | 2n |  |  |
| GGLTR08709C10 |  | GA-GL MZ ; Ironmongery (TR RM) | 11.88d | 2012-04-26 | 2012-05-10 | GGLTR08105C10 |  |  |  |  | 130.62d | 46.83d | IRONMONGERY; Cost | GGLTR08709C0 | GA | C | GL | TR | DO | 087 | 09 | PP | BILL 6 | B06 | S1 | IM | R00 | ACF06 | 087 | 322 | 20001100 |  |  |  | 08 |  |  |  |  |
| GGLTR27030C10 |  | GA-GL MZ ; Final Fix, Inst of ELV device (Detector/Speaker) (TR RM) | 18d | 2012-04-28 | 2012-05-19 | GGLTR27002C10 |  |  |  |  | 83.8d | 0d | ELECTRICAL; Cost | GGLTR27030C0 | GA | C | GL | TR | ME | 270 | 30 | PP | BILL 6 | B06 | S1 | FF | R00 | ACF07 | 270 |  |  |  |  |  |  |  | FF |  |  |
| GGLTR01006C10 |  | GA-GL MZ ; 2nd, Ceiling Inspection by Consultants (TR RM) | 0d | 2012-05-19 | 2012-05-19 | GGLTR23009C10, GGLTR23011C10, GGLTR23013C10, GGLTR26007C10, GGLTR23003C10, GGLTR23074C10, GGLTR26015C10, GGLTR26019C10, GGLTR26076C10, GGLTR27030C10, GGLTR26013C10 |  |  |  |  | 83.8d | 0d | Cost | GGLTR01006C0 | GA | C | GL | TR | ME | 010 | 06 | PP | BILL 6 | B06 | S1 | CI | R00 | ACF07 | 010 |  |  |  |  |  |  |  | 2n |  |  |
| GGLTR09503C10 |  | GA-GL MZ ; Ceiling closure (TR RM) | 12d | 2012-05-19 | 2012-06-02 | GGLTR01006C10, GGLTR09501C10, GGLTR21115C10, GGLTR26005C10, GGLTR26007C10, GGLTR26026C10, GGLTR26027C10, GGLTR23023C10 |  |  |  |  | 83.8d | 0d | ASSORTED CEILING FINISH; CEILING GYPSUM; Cost | GGLTR09503C0 | GA | C | GL | TR | CE | 095 | 03 | PP | BILL 6 | B06 | S1 | 02 | R00 | ACF06 | 095 | 337 | 20001080 |  |  |  |  |  |  |  |  |
| GGLTR09905C10 |  | GA-GL MZ ; Ceiling Prime & 1st coat (TR RM) | 7.1d | 2012-06-02 | 2012-06-10 | GGLTR09503C10 |  |  |  |  | 97.05d | 0d | CEILING PAINT; Cost | GGLTR09905C0 | GA | C | GL | TR | PA | 099 | 05 | PP | BILL 6 | B06 | S1 | 01 | R00 | ACF06 | 099 | 362 | 1313 |  |  |  |  |  |  |  |  |
| GGLTR26017C10 |  | GA-GL MZ ; Final Fix, Inst of Switch/Sockets (TR RM) | 11.1d | 2012-06-02 | 2012-06-14 | GGLTR09901C10, GGLTR09503C10 |  |  |  |  | 83.8d | 0d | ELECTRICAL; Cost | GGLTR26017C0 | GA | C | GL | TR | ME | 260 | 17 | PP | BILL 6 | B06 | S1 | FF | R00 | ACF07 | 260 |  |  |  |  |  |  |  | FF |  |  |
| GGLTR09907C10 |  | GA-GL MZ ; Ceiling - Final paint (TR RM) | 8d | 2012-06-10 | 2012-06-20 | GGLTR09905C10 |  |  |  |  | 97.05d | 13.25d | CEILING PAINT; Cost | GGLTR09907C0 | GA | C | GL | TR | PA | 099 | 07 | PP | BILL 6 | B06 | S1 | 02 | R00 | ACF06 | 099 | 363 | 1314 |  |  |  |  |  |  |  |  |
| GGLTR01802C10 |  | GA-GL MZ ; MEP de-snag, FIREM sign-off | 17.25d | 2012-06-14 | 2012-07-05 | GGLTR26017C10, GGLTR23074C10, GGLTR23003C10, GGLTR26076C10, GGLTR26013C10, GGLTR26015C10, GGLTR26019C10, GGLTR27030C10 |  |  |  |  | 83.8d | 0d | TESTING & COMMISSIONING; Cost | S05CO01851C0 | GA | C | GL | TR | SC | 018 | 53 | PP | BILL 6 | B06 | S1 | 01 | R00 | ACF07 | 018 |  |  |  |  |  |  |  |  |  |  |
| GGLTR01801C10 |  | GA-GL MZ ; Touch-up & Clean / JV inspection /CIR /De-snag | 28.75d | 2012-07-05 | 2012-08-08 | GGLTR01802C10, GGLTR08709C10, GGLTR09601C10, GGLTR09903C10, GGLTR09907C10 |  |  |  |  | 83.8d | 0d | TESTING & COMMISSIONING; Cost | GGLTR01851C0 | GA | C | GL | TR | SC | 018 | 51 | PP | BILL 6 | B06 | S1 | 02 | R00 | ACF07 | 018 | 396 |  |  |  |  |  |  |  |  |  |
| GGLTR01803C10 |  | GA-GL MZ ; Consultant's final de-snag inspection | 12d | 2012-08-08 | 2012-08-25 | GGLTR01801C10 |  |  |  |  | 83.8d | 53.55d | Labor General; Cost | CP3TS01803C0 | GA | C | GL | TR | SC | 018 | 03 | PP | BILL 6 | B06 | S1 | 03 | R00 | ACF07 | 018 |  |  |  |  |  |  |  |  |  |  |

| ID | WBS | Activity | Duration | Start | Finish | Predecessors | Complete | Remaining | Planned start | Planned finish | Total float | Free float | Resources | Change Order # | NEW ACTIVITY ID | change id | RENZ % COMPLETE | Claimed This Month | CCAD BUILDING(SET) | CCAD PHASE(SET) | CCAD FLOOR(SET) | CCAD ZONE(SET) | CCAD WORK(SET) | CCAD SECTION(SET) | CCAD SERIAL No.(SET) | CCAD RESPONSIBILITY(SET) | CCAD CBS(SET) | CCAD BILL(SET) | CCAD HANDOVER(SET) | CCAD TAG(SET) | CCAD REV(SET) | CCADACF (SET) | CCAD SSCF | Act Selector % | July2011 Target% Complete | CCAD SUB ZONE MEP(SET) | CCAD DIVISION(SET) | CCAD MEQ | R3 Finish |
| --- | --- | --- | --- | --- | --- | --- | --- | --- | --- | --- | --- | --- | --- | --- | --- | --- | --- | --- | --- | --- | --- | --- | --- | --- | --- | --- | --- | --- | --- | --- | --- | --- | --- | --- | --- | --- | --- | --- | --- |
|  | 03 | **Public Area ( Elev.Lobby & Corridors etc.)** |  | 2011-05-14 | 2013-01-08 |  |  |  |  |  |  |  |  |  |  |  |  |  |  |  |  |  |  |  |  |  |  |  |  |  |  |  |  |  |  |  |  |  |  |
| GGLPA09201C10 |  | GA-GL MZ ; Metal Studs (Public Area) | 30d | 2011-05-14 A | 2011-10-17 | MGNMI00101M0 | 50% | 15d | 2011-07-04 | 2011-08-07 | 45.38d | 0d | PARTITIONS [376 h]; PARTITIONS - Metal Studs [64 m]; Cost | 313 | 944 | S08PA09201C0 | 10 | 3160.86 | GA | C | GL | PA | PT | 092 | 01 | PP | BILL 6 | B06 | S1 | 1F | R00 | ACF06 | 092 | PMS |  |  |  |  |  |
| GGLPA09203C10 |  | GA-GL MZ ; Partitions early wall & 1st face (Public Area) | 31.88d | 2011-06-14 A | 2011-11-17 | GGLPA09201C10 | 25% | 23.91d | 2011-06-14 | 2011-07-21 | 183.22d | 83.09d | PARTITIONS; PARTITIONS [292 h]; Cost | 314 | 945 | S08PA09203C0 |  | 4425.21 | GA | C | GL | PA | PT | 092 | 03 | PP | BILL 6 | B06 | S1 | 2F | R00 | ACF06 | 092 | P1F |  |  |  |  |  |
| GGLPA21111C10 |  | GA-GL MZ ; 1st Fix, Inst of Sprinkler main pipe (Public Area) | 90d | 2011-07-10 A | 2012-02-28 | GGLPA22005C10 SS+10d, GGLPA23001C10 | 50% | 45d | 2011-09-28 | 2012-01-17 | 45.38d | 0d | MECHANICAL [876 h]; Cost |  |  | S08PA21111C0 |  | 22477.95 | GA | C | GL | PA | ME | 211 | 11 | PP | BILL 6 | B06 | S1 | 1F | R00 | ACF04 | 211 | M1F | 95 | 1S |  |  |  |
| GGLPA21117C10 |  | GA-GL MZ ; 1st Fix, Inst of Sprinkler branch pipe (Public Area) | 90d | 2011-07-10 A | 2012-04-21 | GGLPA09201C10, GGLPA21111C10 | 50% | 45d | 2011-11-16 | 2012-03-04 | 104.88d | 59.5d | MECHANICAL [931.2 h]; Cost |  |  | S08PA21117C0 |  | 23591.32 | GA | C | GL | PA | ME | 211 | 17 | PP | BILL 6 | B06 | S1 | 1F | R00 | ACF04 | 211 | M1F | 90 | 1S |  |  |  |
| GGLPA23001C10 |  | GA-GL MZ ; 1st Fix, Inst. of Supports for MEP (Public Area) | 156d | 2011-07-10 A | 2011-11-17 | GGLPA09201C10 SS | 75% | 39d | 2011-06-30 | 2012-01-07 | 45.38d | 0d | MECHANICAL [2642.4 h]; Cost |  |  | S08PA23001C0 |  |  | GA | C | GL | PA | ME | 230 | 01 | PP | BILL 6 | B06 | S1 | 1F | R00 | ACF04 | 230 | M1F | 80 | 1S |  |  |  |
| GGLPA26001C10 |  | GA-GL MZ ; 1st Fix, Inst of Trunking/Conduiting (Public Area) | 78d | 2011-07-10 A | 2012-01-15 | GGLPA23001C10 | 40% | 46.8d | 2011-07-28 | 2011-10-29 | 45.38d | 0d | ELECTRICAL [2217.6 h]; Cost |  |  | S08PA26001C0 |  | 36275.78 | GA | C | GL | PA | ME | 260 | 01 | PP | BILL 6 | B06 | S1 | 1F | R00 | ACF04 | 260 | M1F | 25 | 1S |  |  |  |
| GGLPA22011C10 |  | GA-GL MZ ; 2nd Fix, Drainage/Water pipe (wall) (Public Area) | 48d | 2011-10-18 | 2011-12-18 | GGLPA09201C10 |  |  |  |  | 159.13d | 45d | PLUMBING; Cost |  |  | S08PA22011C0 |  | 2041.75 | GA | C | GL | PA | ME | 220 | 11 | PP | BILL 6 | B06 | S1 | 2F | R00 | ACF07 | 220 |  | 20 | 2n |  |  |  |
| GGLPA26009C10 |  | GA-GL MZ ; 2nd Fix, Inst of Wall conduites (Public Area) | 48d | 2011-10-18 | 2011-12-18 | GGLPA09201C10 |  |  |  |  | 159.13d | 45d | ELECTRICAL; Cost |  |  | S08PA26009C0 |  | 7379.44 | GA | C | GL | PA | ME | 260 | 09 | PP | BILL 6 | B06 | S1 | 2F | R00 | ACF07 | 260 |  | 25 | 2n |  |  |  |
| GGLPA27010C10 |  | GA-GL MZ ; 1st Fix, Inst of Trunking for ELV system (Public Area) | 54d | 2011-11-19 | 2012-01-23 | GGLPA23001C10, GGLPA26001C10 SS+12d |  |  |  |  | 45.38d | 0d | ELECTRICAL; Cost |  |  | S08PA27010C0 |  | 75755.18 | GA | C | GL | PA | ME | 270 | 10 | PP | BILL 6 | B06 | S1 | 1F | R00 | ACF04 | 270 | M1F | 80 | 1S |  |  |  |
| GGLPA26013C10 |  | GA-GL MZ ; 1st Fix, Inst of Cable Tray (Public Area) | 54d | 2011-12-01 | 2012-02-05 | GGLPA23001C10, GGLPA27010C10 SS+10d |  |  |  |  | 45.38d | 0d | ELECTRICAL; Cost |  |  | S08PA26013C0 |  | 1597.28 | GA | C | GL | PA | ME | 260 | 13 | PP | BILL 6 | B06 | S1 | 1F | R00 | ACF04 | 260 | M1F | 35 | 1S |  |  |  |
| GGLPA22019C10 |  | GA-GL MZ ; 1st Fix, Inst of Drainage pipe (ceiling) (Public Area) | 54d | 2011-12-17 | 2012-02-19 | GGLPA23001C10, GGLPA26013C10 SS+12d |  |  |  |  | 45.38d | 0d | PLUMBING; Cost |  |  | S08PA22019C0 |  |  | GA | C | GL | PA | ME | 220 | 19 | PP | BILL 6 | B06 | S1 | 1F | R00 | ACF04 | 220 | M1F | 60 | 1S |  |  |  |
| GGLPA22005C10 |  | GA-GL MZ ; 1st Fix, Inst of Water supply pipe (ceiling) (Public Area) | 54d | 2011-12-25 | 2012-02-27 | GGLPA22019C10 SS+7d, GGLPA23001C10 |  |  |  |  | 45.38d | 0d | PLUMBING; Cost |  |  | S08PA22005C0 |  |  | GA | C | GL | PA | ME | 220 | 05 | PP | BILL 6 | B06 | S1 | 1F | R00 | ACF04 | 220 | M1F | 50 | 1S |  |  |  |
| GGLPA23017C10 |  | GA-GL MZ ; 1st Fix, Inst of CHW pipe (Public Area) | 54d | 2012-01-07 | 2012-03-10 | GGLPA21111C10 SS+12d, GGLPA23001C10 |  |  |  |  | 45.38d | 0d | MECHANICAL; Cost |  |  | S08PA23017C0 |  |  | GA | C | GL | PA | ME | 230 | 17 | PP | BILL 6 | B06 | S1 | 1F | R00 | ACF04 | 230 | M1F | 50 | 1S |  |  |  |
| GGLPA08103C10 |  | GA-GL MZ ; Door Frames (Public Area) | 24d | 2012-01-14 | 2012-02-11 | GGLPA09201C10, GNHE08101C0 FS+142d |  |  |  |  | 36.92d | 0d | ASSORTED DOORS; Cost | 316 | 947 | S08PA08103C0 |  |  | GA | C | GL | PA | DO | 081 | 03 | PP | BILL 6 | B06 | S1 | DF | R00 | ACF06 | 081 |  |  |  | 08 |  |  |
| GGLPA23023C10 |  | GA-GL MZ ; 1st Fix, Inst of Main Ducting (Public Area) | 54d | 2012-01-15 | 2012-03-18 | GGLPA23001C10, GGLPA23017C10 SS+7d |  |  |  |  | 79.88d | 0d | MECHANICAL; Cost |  |  | S08PA23023C0 |  |  | GA | C | GL | PA | ME | 230 | 23 | PP | BILL 6 | B06 | S1 | 1F | R00 | ACF04 | 230 | M1F | 50 | 1S |  |  |  |
| GGLPA27001C10 |  | GA-GL MZ ; 1st Fix, Wiring/ Cabling work (Public Area) | 54d | 2012-02-06 | 2012-04-08 | GGLPA26001C10, GGLPA26013C10, GGLPA27010C10 |  |  |  |  | 115.88d | 70.5d | ELECTRICAL; Cost |  |  | S08PA27001C0 |  |  | GA | C | GL | PA | ME | 270 | 01 | PP | BILL 6 | B06 | S1 | 1F | R00 | ACF04 | 270 | M1F | 75 | 1S |  |  |  |
| GGLPA01005C10 |  | GA-GL MZ ; 2nd, Wall Inspection by Consultant (Public Area) | 0d | 2012-02-12 | 2012-02-12 | GGLPA08103C10, GGLPA22011C10, GGLPA26009C10 |  |  |  |  | 114.13d | 14d | Cost |  |  | S08PA01005C0 |  |  | GA | C | GL | PA | ME | 010 | 05 | PP | BILL 6 | B06 | S1 | WI | R00 | ACF07 | 010 |  |  | 2n |  |  |  |
| GGLPA09205C10 |  | GA-GL MZ ; Partitions Closing (Public Area) | 36d | 2012-02-28 | 2012-04-09 | GGLPA01005C10, GGLPA09203C10, GGLPA22005C10, GGLPA22019C10, GGLPA08103C10 FF |  |  |  |  | 100.13d | 0d | PARTITIONS; Cost | 315 | 946 | S08PA09205C0 |  |  | GA | C | GL | PA | PT | 092 | 05 | PP | BILL 6 | B06 | S1 | FF | R00 | ACF06 | 092 | P2F |  |  |  |  |  |
| GGLPA23009C10 |  | GA-GL MZ ; 2nd Fix, Inst of VAV'S CHW connection (Public Area) | 48d | 2012-03-11 | 2012-05-05 | GGLPA23017C10 |  |  |  |  | 45.38d | 0d | MECHANICAL; Cost |  |  | S08PA23009C0 |  |  | GA | C | GL | PA | ME | 230 | 09 | PP | BILL 6 | B06 | S1 | 2F | R00 | ACF07 | 230 |  | 50 | 2n |  |  |  |
| GGLPA23008C10 |  | GA-GL MZ ; 1st Fix, Inst of VCD's/FD's (Public Area) | 54d | 2012-03-19 | 2012-05-20 | GGLPA23023C10 |  |  |  |  | 79.88d | 34.5d | MECHANICAL; Cost |  |  | S08PA23008C0 |  |  | GA | C | GL | PA | ME | 230 | 08 | PP | BILL 6 | B06 | S1 | 1F | R00 | ACF04 | 230 | M1F |  | 1S |  |  |  |
| GGLPA07101C10 |  | GA-GL MZ ; Floor Waterproofing (Public Area) | 12d | 2012-04-10 | 2012-04-23 | GGLPA09205C10 |  |  |  |  | 194d | 0d | THERMAL & MOISTURE; Cost | 313 | 944 | S08PA09201C0 |  |  | GA | C | GL | PA | FF | 071 | 01 | PP | BILL 6 | B06 | S1 | 01 | R00 | ACF03 | 071 |  |  |  |  |  |  |
| GGLPA09901C10 |  | GA-GL MZ ; Wall Prime & 1st coat (Public Area) | 30d | 2012-04-10 | 2012-05-14 | GGLPA09205C10 |  |  |  |  | 118.13d | 0d | WALL PAINT; Cost | 328 | 956 | S08PA09901C0 |  |  | GA | C | GL | PA | PA | 099 | 01 | PP | BILL 6 | B06 | S1 | 01 | R00 | ACF06 | 099 |  |  |  |  |  |  |
| GGLPA26005C10 |  | GA-GL MZ ; 2nd Fix, Wiring for Power/Lighting/Emergency (Public Area) | 48d | 2012-04-10 | 2012-06-04 | GGLPA09205C10 |  |  |  |  | 100.13d | 0d | ELECTRICAL; Cost |  |  | S08PA26005C0 |  |  | GA | C | GL | PA | ME | 260 | 05 | PP | BILL 6 | B06 | S1 | 2F | R00 | ACF07 | 260 |  |  | 2n |  |  |  |
| GGLPA26007C10 |  | GA-GL MZ ; 2nd Fix, Cable Pulling (Public Area) | 48d | 2012-04-10 | 2012-06-04 | GGLPA09201C10 SS+6d, GGLPA09205C10 |  |  |  |  | 154.13d | 108.75d | ELECTRICAL; Cost |  |  | S08PA26007C0 |  | 7501.7 | GA | C | GL | PA | ME | 260 | 07 | PP | BILL 6 | B06 | S1 | 2F | R00 | ACF07 | 260 |  | 10 | 2n |  |  |  |
| GGLPA26011C10 |  | GA-GL MZ ; 2nd Fix, Inst of Equipment (DB) (Public Area) | 48d | 2012-04-10 | 2012-06-04 | GGLPA09205C10 |  |  |  |  | 118.13d | 68.33d | ELECTRICAL; Cost |  |  | S08PA26011C0 |  |  | GA | C | GL | PA | ME | 260 | 11 | PP | BILL 6 | B06 | S1 | 2F | R00 | ACF04 | 260 |  |  | 2n |  | E |  |
| GGLPA26053C10 |  | GA-GL MZ ; 2nd Fix, Wiring / Cabling (Public Area) | 48d | 2012-04-10 | 2012-06-04 | GGLPA09205C10 |  |  |  |  | 154.13d | 108.75d | ELECTRICAL; Cost | 389 | 977 | S08PA26053C0 |  |  | GA | C | GL | PA | ME | 260 | 53 | PP | BILL 6 | B06 | S1 | 2F | R00 | ACF07 | 260 |  |  | 2n |  |  |  |
| GGLPA09301C10 |  | GA-GL MZ ; Floor Tile installation (Public Area) | 18d | 2012-04-24 | 2012-05-14 | GGLPA07101C10 |  |  |  |  | 194d | 86.75d | ASSORTED FLOOR FINISH; Cost | 313 | 944 | S08PA09201C0 |  |  | GA | C | GL | PA | FF | 093 | 01 | PP | BILL 6 | B06 | S1 | 06 | R00 | ACF06 | CT |  |  |  |  |  |  |
| GGLPA23015C10 |  | GA-GL MZ ; 2nd Fix, Insulation of CHW pipe & Duct (Public Area) | 47.5d | 2012-05-06 | 2012-07-01 | GGLPA23009C10, GGLPA23017C10, GGLPA23023C10 |  |  |  |  | 45.38d | 0d | MECHANICAL; Cost |  |  | S08PA23015C0 |  |  | GA | C | GL | PA | ME | 230 | 15 | PP | BILL 6 | B06 | S1 | 2F | R00 | ACF07 | 230 |  |  | 2n |  |  |  |
| GGLPA05501C10 |  | GA-GL MZ ; Handrails & balustrade (Public Area) | 36d | 2012-05-15 | 2012-06-26 | GGLPA09901C10, GAFT1805509C0, GAFT1405509C0, GAFT1705509C0 |  |  |  |  | 188d | 142.62d | SECONDARY STEEL; Cost |  |  | S08PA05501C0 |  |  | GA | C | GL | PA | SW | 055 | 01 | PP | BILL 6 | B06 | S1 | 01 | R00 | ACF03 | a |  |  |  |  |  |  |
| GGLPA33001C10 |  | GA-GL MZ ; Sanitary ware installation (Public Area) | 0d | 2012-05-15 | 2012-05-15 | GGLPA09901C10 |  |  |  |  | 212d | 166.62d | Cost | 313 | 944 | S08PA09201C0 |  |  | GA | C | GL | PA | AC | 330 | 01 | PP | BILL 6 | B06 | S1 | SP | R00 | ACF08 | 330 |  |  |  |  |  |  |
| GGLPA26015C10 |  | GA-GL MZ ; Final Fix, Termination & Gladding of Cables (Public Area) | 29.5d | 2012-06-05 | 2012-07-10 | GGLPA26005C10 |  |  |  |  | 124.63d | 55.25d | ELECTRICAL; Cost |  |  | S08PA26015C0 |  |  | GA | C | GL | PA | ME | 260 | 15 | PP | BILL 6 | B06 | S1 | FF | R00 | ACF07 | 260 |  |  | FF |  |  |  |
| GGLPA27002C10 |  | GA-GL MZ ; 2nd Fix, Wiring Droppers (Public Area) | 33.25d | 2012-07-01 | 2012-08-08 | GGLPA09205C10 SS+15d, GGLPA21117C10, GGLPA23008C10, GGLPA23009C10, GGLPA23015C10, GGLPA27001C10 |  |  |  |  | 45.38d | 0d | ELECTRICAL; Cost |  |  | S08PA27002C0 |  |  | GA | C | GL | PA | ME | 270 | 02 | PP | BILL 6 | B06 | S1 | 2F | R00 | ACF07 | 270 |  |  | 2n |  |  |  |
| GGLPA09503C20 |  | GA-GL MZ ; Ceiling grid and service tiles (Public Area) | 0d | 2012-08-08 | 2012-08-08 | GGLPA26005C10, GGLPA09205C10, GGLPA23008C10, GGLPA27001C10, GGLPA21117C10, GGLPA27002C10, GGLPA23015C10, GGLPA23009C10, GGLPA09901C10 |  |  |  |  | 45.38d | 0d | Cost |  |  |  |  |  | GA |  | GL |  | CE | 095 |  |  |  | B06 |  | 01 | R00 | ACF06 | 095 |  |  |  |  |  |  |
| GGLPA09601C10 |  | GA-GL MZ ; Flooring (Rubber & etc) (Public Area) | 14d | 2012-08-08 | 2012-08-27 | GGLPA09205C10, GAFCI22002R02 FS+79d, G02CO04404C0, GGLPA09503C20 |  |  |  |  | 107.25d | 0d | RUBBER FLOOR; Cost | 326 | 955 | S08PA09601C0 |  |  | GA | C | GL | PA | FF | 096 | 01 | PP | BILL 6 | B06 | S1 | 03 | R00 | ACF06 | RF |  |  |  |  |  | R3 |
| GGLPA09905C10 |  | GA-GL MZ ; Ceiling Prime & 1st coat (Public Area) | 30d | 2012-08-08 | 2012-09-15 | GGLPA09503C20 |  |  |  |  | 91.25d | 0d | CEILING PAINT; Cost | 330 | 958 | S08PA09905C0 |  |  | GA | C | GL | PA | PA | 099 | 05 | PP | BILL 6 | B06 | S1 | 01 | R00 | ACF06 | 099 |  |  |  |  |  |  |
| GGLPA21113C10 |  | GA-GL MZ ; Final Fix, Inst of Sprinklers head/ Extinguisher (Public Area) | 30d | 2012-08-08 | 2012-09-15 | GGLPA09503C20, GZ9GZ21158R2 FF |  |  |  |  | 69.38d | 0d | MECHANICAL; Cost |  |  | S08PA21113C0 |  |  | GA | C | GL | PA | ME | 211 | 13 | PP | BILL 6 | B06 | S1 | FF | R00 | ACF07 | 211 |  |  | FF |  |  |  |
| GGLPA23019C10 |  | GA-GL MZ ; Final Fix, Inst of Grilles & Diffusers (Public Area) | 30d | 2012-08-08 | 2012-09-15 | GGLPA09503C20 |  |  |  |  | 69.38d | 0d | MECHANICAL; Cost |  |  | S08PA23019C0 |  |  | GA | C | GL | PA | ME | 230 | 19 | PP | BILL 6 | B06 | S1 | FF | R00 | ACF07 | 230 |  |  | FF |  |  |  |
| GGLPA26003C10 |  | GA-GL MZ ; Final Fix, Inst of Light fittings (Public Area) | 30d | 2012-08-08 | 2012-09-15 | GGLPA09503C20 |  |  |  |  | 69.38d | 0d | ELECTRICAL; Cost |  |  | S08PA26003C0 |  |  | GA | C | GL | PA | ME | 260 | 03 | PP | BILL 6 | B06 | S1 | FF | R00 | ACF07 | 260 |  |  | FF |  |  |  |
| GGLPA26017C10 |  | GA-GL MZ ; Final Fix, Inst of Ceiling rose (Public Area) | 30d | 2012-08-08 | 2012-09-15 | GGLPA09503C20 |  |  |  |  | 69.38d | 0d | ELECTRICAL; Cost |  |  | S08PA26017C0 |  |  | GA | C | GL | PA | ME | 260 | 17 | PP | BILL 6 | B06 | S1 | FF | R00 | ACF07 | 260 |  |  | FF |  |  |  |
| GGLPA27030C10 |  | GA-GL MZ ; Final Fix, Inst of ELV devise (Detector/Speaker) (Public Area) | 30d | 2012-08-08 | 2012-09-15 | GGLPA09503C20 |  |  |  |  | 69.38d | 0d | ELECTRICAL; Cost |  |  | S08PA27030C0 |  |  | GA | C | GL | PA | ME | 270 | 30 | PP | BILL 6 | B06 | S1 | FF | R00 | ACF07 | 270 |  |  | FF |  |  |  |
| GGLPA23021C10 |  | GA-GL MZ ; 2nd Fix, Inst of Flexible Duct & Plenum boxes (Public Area) | 48d | 2012-08-15 | 2012-10-13 | GGLPA21117C10, GGLPA23008C10, GGLPA23009C10, GGLPA23015C10, GGLPA27001C10, GGLPA09205C10, GGLPA09503C20 SS+6d, GZ9GZ23060R2 FF, DV10GZ23060R2 FF |  |  |  |  | 45.38d | 0d | MECHANICAL; Cost |  |  | S08PA23021C0 |  |  | GA | C | GL | PA | ME | 230 | 21 | PP | BILL 6 | B06 | S1 | 2F | R00 | ACF07 | 230 |  |  | 2n |  |  |  |
| GGLPA27020C10 |  | GA-GL MZ ; 2nd Fix, Inst of ELV Equipment (Panels) (Public Area) | 48d | 2012-08-15 | 2012-10-13 | GGLPA09205C10, GGLPA09503C20 SS+6d |  |  |  |  | 51.38d | 1.57d | ELECTRICAL; Cost |  |  | S08PA27020C0 |  |  | GA | C | GL | PA | ME | 270 | 20 | PP | BILL 6 | B06 | S1 | 2F | R00 | ACF04 | 270 |  |  | 2n |  | E |  |
| GGLPA09701C10 |  | GA-GL MZ ; Wall finishes (ST, WD, WC) (Public Area) | 36d | 2012-08-27 | 2012-10-08 | GGLPA26011C10, GGLPA27020C10 SS+6d, GGLPA09503C20, G02CO04404C0, GV10GL10904R2 |  |  |  |  | 49.8d | 0d | ASSORTED WALL FINISH; Cost | 105 | 1002 | S08PA09701C0 |  |  | GA | C | GL | PA | WF | 097 | 01 | PP | BILL 6 | B06 | S1 | 01 | R00 | ACF06 | 097 |  |  |  |  |  |  |
| GGLPA08107C10 |  | GA-GL MZ ; Doors (Public Area) | 18d | 2012-08-27 | 2012-09-17 | GGLPA08103C10, GGLPA09901C10, GGLPA09601C10, GGLPA09301C10 |  |  |  |  | 107.25d | 0d | ASSORTED DOORS; Cost | 317 | 948 | S08PA08107C0 |  |  | GA | C | GL | PA | DO | 081 | 07 | PP | BILL 6 | B06 | S1 | DR | R00 | ACF06 | 081 |  |  |  | 08 |  |  |
| GGLPA01006C10 |  | GA-GL MZ ; 2nd, Ceiling Inspection by Consultants (Public Area) | 0d | 2012-09-15 | 2012-09-15 | GGLPA23009C10, GGLPA23015C10, GGLPA27002C10, GGLPA09205C10 SS+15d, GGLPA21117C10, GGLPA23008C10, GGLPA27001C10, GGLPA26015C10, GGLPA21113C10, GGLPA23019C10, GGLPA26003C10, GGLPA26017C10, GGLPA27030C10 |  |  |  |  | 69.38d | 24d | Cost |  |  | S08PA01006C0 |  |  | GA | C | GL | PA | ME | 010 | 06 | PP | BILL 6 | B06 | S1 | CI | R00 | ACF07 | 010 |  |  | 2n |  |  |  |
| GGLPA09903C10 |  | GA-GL MZ ; Wall Final Paint (Public Area) | 30d | 2012-09-15 | 2012-10-20 | GGLPA09901C10, GGLPA09905C10, GGLPA09503C20 |  |  |  |  | 91.25d | 45.88d | WALL PAINT; Cost | 329 | 957 | S08PA09903C0 |  |  | GA | C | GL | PA | PA | 099 | 03 | PP | BILL 6 | B06 | S1 | 02 | R00 | ACF06 | 099 |  |  |  |  |  |  |
| GGLPA08709C10 |  | GA-GL MZ ; Ironmongery (Public Area) | 12d | 2012-09-17 | 2012-10-01 | GGLPA08107C10 |  |  |  |  | 107.25d | 61.88d | IRONMONGERY; Cost | 322 | 951 | S08PA08709C0 |  |  | GA | C | GL | PA | DO | 087 | 09 | PP | BILL 6 | B06 | S1 | IM | R00 | ACF06 | 087 |  |  |  | 08 |  |  |
| GGLPA11009C10 |  | GA-GL MZ ; Signage (Public Area) | 14d | 2012-10-08 | 2012-10-24 | GGLPA09701C10 |  |  |  |  | 87.68d | 42.3d | SIGNAGES; Cost | 322 | 951 | S08PA11009C0 |  |  | GA | C | GL | PA | SA | 110 | 09 | PP | BILL 6 | B06 | S1 | 09 | R00 | ACF08 | c |  |  |  | 08 |  |  |
| GGLPA09505C10 |  | GA-GL MZ ; Ceiling closure - ACT/Gypsum (Public Area) | 21.75d | 2012-10-13 | 2012-11-10 | GGLPA09503C20, GGLPA09701C10, GGLPA01006C10, GGLPA23021C10, GGLPA26053C10, GGLPA26007C10 |  |  |  |  | 45.38d | 0d | ASSORTED CEILING FINISH; CEILING GYPSUM; Cost | 324 | 953 | S08PA09503C0 |  |  | GA | C | GL | PA | CE | 095 | 03 | PP | BILL 6 | B06 | S1 | 02 | R00 | ACF06 | 095 |  |  |  |  |  |  |
| GGLPA09907C10 |  | GA-GL MZ ; Ceiling Final paint (Public Area) | 18.12d | 2012-11-10 | 2012-12-02 | GGLPA09601C10, GGLPA09905C10, GGLPA09505C10 |  |  |  |  | 57.38d | 12d | CEILING PAINT; Cost | 331 | 959 | S08PA09907C0 |  |  | GA | C | GL | PA | PA | 099 | 07 | PP | BILL 6 | B06 | S1 | 02 | R00 | ACF06 | 099 |  |  |  |  |  |  |
| GGLPA26019C10 |  | GA-GL MZ ; Final Fix, Inst of Switch/Sockets (Public Area) | 18.12d | 2012-11-10 | 2012-12-02 | GGLPA09901C10, GGLPA09505C10, GZ9GZ27061R2 FF, GV09GZ27063R2 FF, GV09GZ27064R2 FF, DV10GZ27061R2 FF |  |  |  |  | 45.38d | 0d | ELECTRICAL; Cost |  |  | S08PA26019C0 |  |  | GA | C | GL | PA | ME | 260 | 19 | PP | BILL 6 | B06 | S1 | FF | R00 | ACF07 | 260 |  |  | FF |  |  |  |

| ID | WBS | Activity | Type | Duration | Start | Finish | Predecessors | Complete | Remaining | Planned start | Planned finish | Total float | Free float | Constraint | Resources | change id | CCAD BUILDING(SET) | CCAD PHASE(SET) | CCAD FLOOR(SET) | CCAD ZONE(SET) | CCAD WORK(SET) | CCAD SECTION(SET) | CCAD SERIAL No.(SET) | CCAD RESPONSIBILITY(SET) | CCAD CBS(SET) | CCAD BILL(SET) | CCAD HANDOVER(SET) | CCAD TAG(SET) | CCAD REV(SET) | CCADACF (SET) | CCAD SSCF | Actual Cost | RENZ % COMPLETE | Phase | Area/ Department | Grids | Are | Weight & Nos | Process | Levels | CCAD CSA | user_number8 | user_integer1 | user_integer2 | user_number7 | Claimed This Month | P_811 | P_711 | CCAD (VO) |
| --- | --- | --- | --- | --- | --- | --- | --- | --- | --- | --- | --- | --- | --- | --- | --- | --- | --- | --- | --- | --- | --- | --- | --- | --- | --- | --- | --- | --- | --- | --- | --- | --- | --- | --- | --- | --- | --- | --- | --- | --- | --- | --- | --- | --- | --- | --- | --- | --- | --- |
|  | 10 | **Precommissioning Tesing & snagging (Public Area)** |  |  | 2012-12-02 | 2013-01-08 |  |  |  |  |  |  |  |  |  |  |  |  |  |  |  |  |  |  |  |  |  |  |  |  |  |  |  |  |  |  |  |  |  |  |  |  |  |  |  |  |  |  |  |
| GGLTS01804C10 |  | GA-GL MZ ; MEP de-snag, FIREM sign-off |  | 12d | 2012-12-02 | 2012-12-17 | GGLPA26015C10, GGLPA21113C10, GGLPA23019C10, GGLPA26017C10, GGLPA26003C10, GGLPA27030C10, GGLPA26019C10, GGLPA33001C10 |  |  |  |  | 45.38d | 0d |  | TESTING & COMMISSIONING; Cost | GGLTS01801C0 | GA | C | GL | TS | SC | 018 | 01 | PP | BILL 6 | B06 | S1 | 01 | R00 | ACF07 | 018 |  |  |  |  |  |  |  |  |  |  |  |  |  |  |  |  |  |  |
| GGLTS01806C10 |  | GA-GL MZ ; Touch-up & Clean / JV inspection /CIR /De-snag |  | 18d | 2012-12-17 | 2013-01-08 | GGLPA08709C10, GGLPA09301C10, GGLPA09601C10, GGLPA09701C10, GGLPA09903C10, GGLPA09907C10, GGLPA11009C10, GGLTS01804C10, GGLPA05501C10, GGLPA09905C10, GGLPA09505C10 |  |  |  |  | 45.38d | 0d |  | TESTING & COMMISSIONING; Cost | GGLTS01802C0 | GA | C | GL | TS | SC | 018 | 02 | PP | BILL 6 | B06 | S1 | 02 | R00 | ACF07 | 018 |  |  |  |  |  |  |  |  |  |  |  |  |  |  |  |  |  |  |
| GGLTS01808C10 |  | GA-GL MZ ; Consultant's final de-snag inspection |  | 0d | 2013-01-08 | 2013-01-08 | GGLTS01806C10 |  |  |  |  | 45.38d | 17.38d |  | Cost | GGLTS01803C0 | GA | C | GL | TS | SC | 018 | 03 | PP | BILL 6 | B06 | S1 | 03 | R00 | ACF07 | 018 |  |  |  |  |  |  |  |  |  |  |  |  |  |  |  |  |  |  |
|  | 01 | **Level 1** |  |  | 2010-12-13 | 2013-01-09 |  |  |  |  |  |  |  |  |  |  |  |  |  |  |  |  |  |  |  |  |  |  |  |  |  |  |  |  |  |  |  |  |  |  |  |  |  |  |  |  |  |  |  |
|  | 01 | **Structure & Envelopment** |  |  | 2010-12-13 | 2012-06-10 |  |  |  |  |  |  |  |  |  |  |  |  |  |  |  |  |  |  |  |  |  |  |  |  |  |  |  |  |  |  |  |  |  |  |  |  |  |  |  |  |  |  |  |
| G01S105101C0 |  | GA-01 ; Erection of Structural Steel of 1st Floor (Zone S1) |  | 11.11d | 2010-12-13 A | 2011-01-28 A | GGLS105103C0 | 100% |  | 2011-03-07 | 2011-03-20 |  |  |  | STRUCTURAL STEEL [5696 h]; STRUCTURAL STEEL [188 T(Fe)]; Cost | G01S105101C0 | GA | C | 01 | S1 | ST | 051 | 01 |  | BILL 6 | B06 | S1 | 01 | R00 | ACF03 | 051 | 627645.25 | 100 | Z2 | GA | P12 | R | A6 | EREC | POD2 | ST |  |  |  |  |  |  |  |  |
| G01S105103C0 |  | GA-01 ; Alignment & welding of 1st Floor (Zone S1) |  | 5d | 2010-12-20 A | 2011-03-22 A | G01S105101C0 | 100% |  | 2011-01-17 | 2011-01-23 |  |  |  | STRUCTURAL STEEL [921 h]; Cost | G01S105103C0 | GA | C | 01 | S1 | ST | 051 | 03 |  | BILL 6 | B06 | S1 | 02 | R00 | ACF03 | 051 | 69738.36 | 100 | Z2 | GA | P12 | R | A6 | EREC | POD2 | ST |  |  |  |  |  |  |  |  |
| G01S205101C0 |  | GA-01 ; Erection of Structural Steel of 1st Floor (Zone S2) |  | 11.1d | 2011-01-08 A | 2011-03-27 A | GGLS205103C0 | 100% |  | 2011-02-20 | 2011-03-05 |  |  |  | STRUCTURAL STEEL [9244 h]; STRUCTURAL STEEL [305 T(Fe)]; Cost | G01S205101C0 | GA | C | 01 | S2 | ST | 051 | 01 |  | BILL 6 | B06 | S1 | 01 | R00 | ACF03 | 051 |  | 100 | Z2 | GA | P12 | R | A6 | EREC | POD2 | ST |  |  |  |  |  |  |  |  |
| G01S205103C0 |  | GA-01 ; Alignment & welding of 1st Floor (Zone S2) |  | 5d | 2011-02-03 A | 2011-04-11 A | G01S205101C0 | 100% |  | 2011-02-21 | 2011-02-27 |  |  |  | STRUCTURAL STEEL [689 h]; Cost | G01S205103C0 | GA | C | 01 | S2 | ST | 051 | 03 |  | BILL 6 | B06 | S1 | 02 | R00 | ACF03 | 051 |  | 100 | Z2 | GA | P12 | R | A6 | EREC | POD2 | ST |  |  |  |  |  |  |  |  |
| G01S103399C0 |  | GA-01 ; Concrete on Metal Decking 1st FLR (Zone S1) |  | 10d | 2011-03-14 A | 2011-04-24 A | G01S105305C0 | 100% |  | 2011-04-09 | 2011-04-20 |  |  |  | CONCRETE [13360 h]; CONCRETE [336 m3]; Cost | G01S103399C0 | GA | C | 01 | S1 | CT | 033 | 99 |  | BILL 6 | B06 | S1 | 08 | R00 | ACF03 | 033 |  | 100 | Z2 | GA | P12 | R | A6 | MDEC | POD2 |  |  |  |  |  |  |  |  |  |
| G01S107807C0 |  | GA-01 ; Cementitious Fire Proofing at 1st FLR (Zone S1) |  | 20d | 2011-04-06 A | 2011-05-30 A | G02S103399C0 | 100% |  | 2011-04-11 | 2011-05-04 |  |  |  | CEMENTITIOUS FIREPROOFING [3314 h]; CEMENTITIOUS FIREPROOFING [6627 m2]; Cost | G01S107807C0 | GA | C | 01 | S1 | ST | 078 | 07 |  | BILL 6 | B06 | S1 | 04 | R00 | ACF03 | 078 |  | 100 | Z2 | GA | P12 | R | A6 | FIRE | POD2 | ST |  |  |  |  |  |  |  |  |
| G01S207807C0 |  | GA-01 ; Cementitious Fire Proofing at 1st FLR (Zone S2) |  | 14d | 2011-04-07 A | 2011-05-30 A | G02S203399C0 | 100% |  | 2011-04-24 | 2011-05-10 |  |  |  | CEMENTITIOUS FIREPROOFING [2480 h]; CEMENTITIOUS FIREPROOFING [4959 m2]; Cost | G01S207807C0 | GA | C | 01 | S2 | ST | 078 | 07 |  | BILL 6 | B06 | S1 | 04 | R00 | ACF03 | 078 |  | 100 | Z2 | GA | P12 | R | A6 | FIRE | POD2 | ST |  |  |  |  |  |  |  |  |
| G01S105305C0 |  | GA-01 ; Metal Decking 1st FLR (Zone S1) |  | 12d | 2011-04-12 A | 2011-04-27 A | G01S105103C0, G01S205305C0, G02S105101C0 | 100% |  | 2011-03-26 | 2011-04-09 |  |  |  | METAL DECKING [343 h]; METAL DECKING [433 m2]; Cost | G01S105305C0 | GA | C | 01 | S1 | ST | 053 | 05 |  | BILL 6 | B06 | S1 | 03 | R00 | ACF03 | 053 |  | 100 | Z2 | GA | P12 | R | A6 | MDEC | POD2 | ST |  |  |  |  |  |  |  |  |
| G01S205305C0 |  | GA-01 ; Metal Decking 1st FLR (Zone S2) |  | 12d | 2011-04-13 A | 2011-04-20 A | G01S205103C0, G02S205101C0 | 100% |  | 2011-03-12 | 2011-03-26 |  |  |  | METAL DECKING [256 h]; METAL DECKING [324 m2]; Cost | G01S205305C0 | GA | C | 01 | S2 | ST | 053 | 05 |  | BILL 6 | B06 | S1 | 03 | R00 | ACF03 | 053 |  | 100 | Z2 | GA | P12 | R | A6 | MDEC | POD2 | ST |  |  |  |  |  |  |  |  |
| G01CO04408C0 |  | GA-01 ; C3 Bracket (Common Zone) |  | 136d | 2011-04-16 A | 2012-01-07 | G01S107807C0, G01S207807C0, G02CO04408C0 SS | 42% | 78.88d | 2011-10-15 | 2012-03-29 | 42.3d | 0d |  | FACADE CURTAIN WALL 3 [5399.5 h]; Cost | G01CO04408C0 | GA | C | 01 | CO | FA | 044 | 08 | PP | BILL 6 | B06 | S1 | FC3 | R00 | ACF05 | 044 |  | 20 |  |  |  |  |  |  |  | FA | 0 | 0 | 0 | 0 | 255680.71 | 42 | 35 | CP |
| G01S203399C0 |  | GA-01 ; Concrete on Metal Decking 1st FLR (Zone S2) |  | 10d | 2011-04-20 A | 2011-04-28 A | G01S205305C0 | 100% |  | 2011-03-26 | 2011-04-06 |  |  |  | CONCRETE [9816 h]; CONCRETE [247 m3]; Cost | G01S203399C0 | GA | C | 01 | S2 | CT | 033 | 99 |  | BILL 6 | B06 | S1 | 08 | R00 | ACF03 | 033 |  | 100 | Z2 | GA | P12 | R | A6 | MDEC | POD2 |  |  |  |  |  |  |  |  |  |
| G01GN02105C0 |  | GA-01 ; Temporary Enclosure | level of effort | 194.42d | 2011-06-08 A | 2012-06-10 | G01TR09203C0 SS, G01PA09203C50 SS, G01M109203C10 SS |  | 210.88d | 2011-06-19 | 2012-02-12 | 201.12d | 0d |  | Labor General [0.6 h]; Cost |  | GA | C | 01 | GEN | FA | GEN |  | PP |  | B06 |  | TE | R00 | ACF05 | 010 |  |  |  |  |  |  |  |  |  | FA |  |  |  |  |  | 31.73 | 18 |  |
| G01CO04403C0 |  | GA-01 ; C4 Bracket (Common Zone) |  | 30d | 2011-10-29 | 2011-12-08 | G01S107807C0, G01S207807C0, G01CO04403C03 |  |  |  |  | 273.59d | 0d |  | FACADE CURTAIN WALL 4 [11131.1 h]; Cost | DP3CO04403C0 | GA | C | 01 | CO | FA | 044 | 03 | PP | BILL 6 | B06 | S1 | FC4 | R00 | ACF05 | 044 |  |  |  |  |  |  |  |  |  | FA |  |  |  |  |  |  |  |  |
| G01CO04403C03 |  | GA-01 ; C4 Bracket (Common Zone) | milestone | 0d | 2011-10-29 | 2011-10-29 | MGNMI00101M0 |  |  |  |  | 273.59d | 0d | start on or after 2011-10-29 |  | DP3CO04403C0 | GA | C | 01 | CO | FA | 044 | 03 | PP | BILL 6 | B06 | S1 | FC4 | R00 | ACF05 | 044 |  |  |  |  |  |  |  |  |  |  |  |  |  |  |  |  |  |  |
| G01CO04405C0 |  | GA-01 ; C4 Transom & Mullion (Common Zone) |  | 60d | 2011-12-08 | 2012-02-19 | G01CO04403C0 |  |  |  |  | 273.59d | 0d |  | FACADE CURTAIN WALL 4 [44523.9 h]; Cost | DP3CO04405C0 | GA | C | 01 | CO | FA | 044 | 05 | PP | BILL 6 | B06 | S1 | FC4 | R00 | ACF05 | 044 |  |  |  |  |  |  |  |  |  | FA |  |  |  |  |  |  |  |  |
| G01CO04407C0 |  | GA-01 ; C4 Glazing (Common Zone) |  | 60d | 2012-01-07 | 2012-03-18 | G01CO04405C0 SS+24d, G01GN02105C0 FF, G01CO04405C0 FF |  |  |  |  | 273.59d | 137.18d |  | FACADE CURTAIN WALL 4 [18551.9 h]; Cost | DP3CO04407C0 | GA | C | 01 | CO | FA | 044 | 07 | PP | BILL 6 | B06 | S1 | FC4 | R00 | ACF05 | 044 |  |  |  |  |  |  |  |  |  | FA |  |  |  |  |  |  |  |  |
| G01CO04431C0 |  | GA-01 ; C3 Transom & Mullion (Common Zone) |  | 102d | 2012-01-07 | 2012-05-06 | G01CO04408C0 |  |  |  |  | 54.87d | 0d |  | FACADE CURTAIN WALL 3 [21596.9 h]; Cost | G01CO04431C0 | GA | C | 01 | CO | FA | 044 | 31 | PP | BILL 6 | B06 | S1 | FC3 | R00 | ACF05 | 044 |  |  |  |  |  |  |  |  |  | FA |  |  |  |  |  |  |  |  |
| G01CO04404C0 |  | GA-01 ; C3 Glazing (Common Zone) |  | 102d | 2012-02-12 | 2012-06-10 | G01CO04431C0 SS+30d, G01CO04431C0 FF, G01GN02105C0 FF |  |  |  |  | 54.87d | 0d |  | FACADE ALUMINUM CURTAIL WALL [3178.8 h]; FACADE CURTAIN WALL 3 [9655 h]; FACADE CURTAIN WALL 4 [17411.4 h]; FACADE METAL PANEL 2 [4383 h]; FACADE ALUMINUM CURTAIN WALL [1162 m2]; FACADE CURTAIN WALL 3 [3529 m2]; FACADE CURTAIN WALL 4 [6364 m2]; FACADE METAL PANEL 2 [1602 m2]; FACADE TOTAL QUANTITY m2 [12657 m2]; Cost | G01CO04404C0 | GA | C | 01 | CO | FA | 044 | 04 | PP | BILL 6 | B06 | S1 | FC3 | R00 | ACF05 | 044 |  |  |  |  |  |  |  |  |  | FA |  |  |  |  |  |  |  |  |

| ID | WBS | Activity | Duration | Start | Finish | Predecessors | Complete | Remaining | Planned start | Planned finish | Total float | Free float | Resources | user_number8 | user_integer1 | user_integer2 | user_number7 | Change Order # | NEW ACTIVITY ID | change id | RENZ % COMPLETE | Claimed This Month | CCAD BUILDING(SET) | CCAD PHASE(SET) | CCAD FLOOR(SET) | CCAD ZONE(SET) | CCAD WORK(SET) | CCAD SECTION(SET) | CCAD SERIAL No.(SET) | CCAD RESPONSIBILITY(SET) | CCAD CBS(SET) | CCAD BILL(SET) | CCAD HANDOVER(SET) | CCAD TAG(SET) | CCAD REV(SET) | CCAD (VO) | CCADACF (SET) | CCAD CSA | CCAD SSCF | Act Selector % | CCAD DIVISION(SET) | July2011 Target% Complete | CCAD SUB ZONE MEP(SET) | CCAD MEQ | IDDD |
| --- | --- | --- | --- | --- | --- | --- | --- | --- | --- | --- | --- | --- | --- | --- | --- | --- | --- | --- | --- | --- | --- | --- | --- | --- | --- | --- | --- | --- | --- | --- | --- | --- | --- | --- | --- | --- | --- | --- | --- | --- | --- | --- | --- | --- | --- |
|  | 02 | **TR Room** |  | 2011-05-22 | 2012-08-05 |  |  |  |  |  |  |  |  |  |  |  |  |  |  |  |  |  |  |  |  |  |  |  |  |  |  |  |  |  |  |  |  |  |  |  |  |  |  |  |  |
| G01TR09201C0 |  | GA-01 ; Metal Studs (TR RM) | 6d | 2011-05-22 A | 2011-10-01 | G01PA09201C50 SS, G01S107807C0, G01S207807C0 | 85% | 0.9d | 2011-07-03 | 2011-07-10 | 146.6d | 0d | PARTITIONS [87 h]; PARTITIONS - Metal Studs [9 m]; Cost | 0 | 0 | 0 | 0 | 313 | 885 | G01TR09201C0 | 5 | 1185.32 | GA | C | 01 | TR | PT | 092 | 01 | PP | BILL 6 | B06 | S1 | 1F | R00 | CP | ACF06 | GP | 092 | PMS |  |  |  |  |  |
| G01TR09203C0 |  | GA-01 ; Partitions 1st face (TR RM) | 23d | 2011-06-19 A | 2011-10-19 | G01TR09201C0 | 30% | 16.1d | 2011-06-19 | 2011-07-16 | 160.5d | 61.6d | PARTITIONS [9 m]; PARTITIONS [81 h]; Cost | 0 | 0 | 0 | 0 | 314 | 886 | G01TR09203C0 |  | 553.15 | GA | C | 01 | TR | PT | 092 | 03 | PP | BILL 6 | B06 | S1 | 2F | R00 | CP | ACF06 | GP | 092 | P1F |  |  |  |  |  |
| G01TR08101C0 |  | GA-01 ; Door Frames (TR RM) | 18d | 2011-07-10 A | 2012-02-11 | G01TR09201C0, GNHE08101C0 FS+149d | 5% | 17.1d | 2011-07-19 | 2011-08-09 | 98.9d | 0d | ASSORTED DOORS [7 h]; Cost |  |  |  |  | 316 | 20001090 | G01TR08101C0 |  |  | GA | C | 01 | TR | DO | 081 | 01 | PP | BILL 6 | B06 | S1 | DF | R00 | CP | ACF06 |  | 081 |  | 08 |  |  |  |  |
| G01TR09205C0 |  | GA-01 ; Partitions Closing (TR RM) | 30d | 2011-07-10 A | 2012-02-11 | G01TR01005C0, G01TR09201C0, G01TR09203C0, GAFOA09208C1 FF, G01TR08101C0 FF | 5% | 28.5d | 2011-08-18 | 2011-09-24 | 98.9d | 0d | PARTITIONS [9 m]; PARTITIONS [90 h]; Cost |  |  |  |  | 315 | 887 | G01TR09205C0 |  |  | GA | C | 01 | TR | PT | 092 | 05 | PP | BILL 6 | B06 | S1 | FF | R00 | CP | ACF06 | GP | 092 | P2F |  |  |  |  |  |
| G01TR26026C0 |  | GA-01 ; 2nd Fix, Conduit (TR RM) | 30d | 2011-10-01 | 2011-11-05 | G01TR09201C0 |  |  |  |  | 146.6d | 0d | ELECTRICAL [451.2 h]; Cost |  |  |  |  |  |  | G01TR26026C0 |  |  | GA | C | 01 | TR | ME | 260 | 26 | PP | BILL 6 | B06 | S1 | 2F | R00 |  | ACF07 | MEP | 260 |  |  | 25 | 2n |  |  |
| G01TR01005C0 |  | GA-01 ; 2nd, Wall Inspection by Consultant (TR RM) | 0d | 2011-11-05 | 2011-11-05 | G01TR26026C0 |  |  |  |  | 146.6d | 47.7d | Cost |  |  |  |  |  |  | G01TR01005C0 |  |  | GA | C | 01 | TR | ME | 010 | 05 | PP | BILL 6 | B06 | S1 | WI | R00 |  | ACF07 | MEP | 010 |  |  |  | 2n |  |  |
| G01TR09601C0 |  | GA-01 ; Floor Finishes (TR RM) | 12d | 2012-02-11 | 2012-02-25 | G01TR09205C0 |  |  |  |  | 128.9d | 0d | ASSORTED FLOOR FINISH [48 h]; ASSORTED FLOOR FINISH [23 m2]; Cost |  |  |  |  | 359 | 20001120 | G01TR09601C0 |  |  | GA | C | 01 | TR | FF | 096 | 01 | PP | BILL 6 | B06 | S1 | 01 | R00 |  | ACF06 |  | FF |  |  |  |  |  |  |
| G01TR09901C0 |  | GA-01 ; Wall Prime & 1st coat (TR RM) | 18d | 2012-02-11 | 2012-03-03 | G01TR09205C0 |  |  |  |  | 98.9d | 0d | WALL PAINT [7 h]; WALL PAINT [8 m2]; Cost |  |  |  |  | 360 | 20001110 | G01TR09901C0 |  |  | GA | C | 01 | TR | PA | 099 | 01 | PP | BILL 6 | B06 | S1 | 01 | R00 |  | ACF06 |  | 099 |  |  |  |  |  |  |
| G01TR23009C0 |  | GA-01 ; 2nd Fix, Inst of VAV'S CHW connection (TR RM) | 30d | 2012-02-11 | 2012-03-17 | G01TR09205C0 |  |  |  |  | 110.9d | 0d | MECHANICAL [788.4 h]; Cost |  |  |  |  |  |  | G01TR23009C0 |  |  | GA | C | 01 | TR | ME | 230 | 09 | PP | BILL 6 | B06 | S1 | 2F | R00 |  | ACF07 | MEP | 230 |  |  | 25 | 2n |  |  |
| G01TR23011C0 |  | GA-01 ; 2nd Fix, Inst of VCD's/FD's (TR RM) | 30d | 2012-02-11 | 2012-03-17 | G01TR09205C0 |  |  |  |  | 110.9d | 0d | MECHANICAL [673.2 h]; Cost |  |  |  |  |  |  | G01TR23011C0 |  |  | GA | C | 01 | TR | ME | 230 | 11 | PP | BILL 6 | B06 | S1 | 2F | R00 |  | ACF07 | MEP | 230 |  |  | 30 | 2n |  |  |
| G01TR26007C0 |  | GA-01 ; 2nd Fix, Cable Pulling (TR RM) | 30d | 2012-02-11 | 2012-03-17 | G01TR26026C0, G01TR09205C0 |  |  |  |  | 140.9d | 30d | ELECTRICAL [1117.2 h]; Cost |  |  |  |  |  |  | G01TR26007C0 |  |  | GA | C | 01 | TR | ME | 260 | 07 | PP | BILL 6 | B06 | S1 | 2F | R00 |  | ACF07 | MEP | 260 |  |  | 20 | 2n |  |  |
| G01TR26009C0 |  | GA-01 ; 2nd Fix, Inst of Equipment (DB, TR, SG,BUS) (TR RM) | 30d | 2012-02-11 | 2012-03-17 | G01TR09205C0 |  |  |  |  | 122.9d | 0d | ELECTRICAL [946.8 h]; Cost |  |  |  |  |  |  | G01TR26009C0 |  |  | GA | C | 01 | TR | ME | 260 | 09 | PP | BILL 6 | B06 | S1 | 2F | R00 |  | ACF04 | MEP | 260 |  |  |  | 2n | E |  |
| G01TR26027C0 |  | GA-01 ; 2nd Fix, Wiring / Cabling (TR RM) | 30d | 2012-02-11 | 2012-03-17 | G01TR26026C0, G01TR09205C0 |  |  |  |  | 140.9d | 42d | ELECTRICAL [242.4 h]; Cost |  |  |  |  | 417 | 1318 | G01TR26027C0 |  |  | GA | C | 01 | TR | ME | 260 | 27 | PP | BILL 6 | B06 | S1 | 2F | R00 |  | ACF07 | MEP | 260 |  |  | 20 | 2n |  |  |
| G01TR21115C0 |  | GA-01 ; 2nd Fix, Gaseous Fire Suppression (TR RM) | 30d | 2012-02-25 | 2012-03-31 | G01TR09601C0 |  |  |  |  | 128.9d | 30d | MECHANICAL [626.4 h]; Cost |  |  |  |  | 411 | 20001130 | G01TR21115C0 |  |  | GA | C | 01 | TR | ME | 211 | 15 | PP | BILL 6 | B06 | S1 | 2F | R00 |  | ACF07 | MEP | 211 |  |  |  | 2n |  |  |
| G01TR08105C0 |  | GA-01 ; Doors (TR RM) | 18d | 2012-03-03 | 2012-03-24 | G01TR08101C0, G01TR09901C0, G01TR09601C0 |  |  |  |  | 164.9d | 0d | ASSORTED DOORS [10 h]; ASSORTED DOORS [1 no]; Cost |  |  |  |  | 317 | 1325 | G01TR08105C0 |  |  | GA | C | 01 | TR | DO | 081 | 05 | PP | BILL 6 | B06 | S1 | DR | R00 |  | ACF06 |  | 081 |  | 08 |  |  |  |  |
| G01TR09501C0 |  | GA-01 ; Ceiling Grid and Service Tile (TR RM) | 24d | 2012-03-03 | 2012-03-31 | G01TR09205C0 SS+15d, G01TR09901C0 |  |  |  |  | 98.9d | 0d | CEILING GRID FOR GYPSUM [2.62 h]; CEILING GRID FOR GYPSUM [0.45 m2]; Cost |  |  |  |  | 336 | 1327 | G01TR09501C0 |  |  | GA | C | 01 | TR | CE | 095 | 01 | PP | BILL 6 | B06 | S1 | 01 | R00 |  | ACF06 |  | 095 |  |  |  |  |  | 1 |
| G01TR09903C0 |  | GA-01 ; Wall - Final Paint (TR RM) | 12d | 2012-03-03 | 2012-03-17 | G01TR09901C0 |  |  |  |  | 182.9d | 84d | WALL PAINT [4 h]; WALL PAINT [4 m2]; Cost |  |  |  |  | 361 | 1312 | G01TR09903C0 |  |  | GA | C | 01 | TR | PA | 099 | 03 | PP | BILL 6 | B06 | S1 | 02 | R00 |  | ACF06 |  | 099 |  |  |  |  |  |  |
| G01TR23013C0 |  | GA-01 ; 2nd Fix, Insulation of CHW pipe & Duct (TR RM) | 30d | 2012-03-17 | 2012-04-21 | G01TR23009C0, G01TR23011C0 |  |  |  |  | 110.9d | 0d | MECHANICAL [1699.2 h]; Cost |  |  |  |  |  |  | G01TR23013C0 |  |  | GA | C | 01 | TR | ME | 230 | 13 | PP | BILL 6 | B06 | S1 | 2F | R00 |  | ACF07 | MEP | 230 |  |  | 30 | 2n |  |  |
| G01TR26013C0 |  | GA-01 ; Final Fix, Termination & Gladding of Cables (TR RM) | 18d | 2012-03-17 | 2012-04-07 | G01TR26009C0 |  |  |  |  | 122.9d | 12d | ELECTRICAL [62.4 h]; Cost |  |  |  |  |  |  | G01TR26013C0 |  |  | GA | C | 01 | TR | ME | 260 | 13 | PP | BILL 6 | B06 | S1 | FF | R00 |  | ACF07 | MEP | 260 |  |  |  | FF |  |  |
| G01TR08709C0 |  | GA-01 ; Ironmongery (TR RM) | 12d | 2012-03-24 | 2012-04-07 | G01TR08105C0 |  |  |  |  | 164.9d | 66d | IRONMONGERY [10 h]; IRONMONGERY [1 no]; Cost |  |  |  |  | 322 | 20001100 | G01TR08709C0 |  |  | GA | C | 01 | TR | DO | 087 | 09 | PP | BILL 6 | B06 | S1 | IM | R00 |  | ACF06 |  | 087 |  | 08 |  |  |  |  |
| G01TR23003C0 |  | GA-01 ; Final Fix, Inst of Grilles & Diffusers (TR RM) | 12d | 2012-03-31 | 2012-04-14 | G01TR09501C0 |  |  |  |  | 116.9d | 6d | MECHANICAL [1030.8 h]; Cost |  |  |  |  |  |  | G01TR23003C0 |  |  | GA | C | 01 | TR | ME | 230 | 03 | PP | BILL 6 | B06 | S1 | FF | R00 |  | ACF07 | MEP | 230 |  |  |  | FF |  |  |
| G01TR23023C0 |  | GA-01 ; 2nd Fix, Flexible ducts (TR RM) | 30d | 2012-03-31 | 2012-05-05 | G01TR09205C0, G01TR09501C0 |  |  |  |  | 98.9d | 0d | MECHANICAL [1962 h]; Cost |  |  |  |  | 412 | 20001140 | G01TR23023C0 |  |  | GA | C | 01 | TR | ME | 230 | 23 | PP | BILL 6 | B06 | S1 | 2F | R00 |  | ACF07 | MEP | 230 |  |  |  | 2n |  |  |
| G01TR23074C0 |  | GA-01 ; Final Fix, Grilles, panels & diffusers (TR RM) | 18d | 2012-03-31 | 2012-04-21 | G01TR09501C0 |  |  |  |  | 110.9d | 0d | MECHANICAL [1030.8 h]; Cost |  |  |  |  | 419 | 20001160 | G01TR23074C0 |  |  | GA | C | 01 | TR | ME | 230 | 74 | PP | BILL 6 | B06 | S1 | FF | R00 |  | ACF07 | MEP | 230 |  |  |  | FF |  |  |
| G01TR26005C0 |  | GA-01 ; 2nd Fix, Wiring for Power/Lighting/Emergency (TR RM) | 30d | 2012-03-31 | 2012-05-05 | G01TR26026C0, G01TR09501C0 |  |  |  |  | 98.9d | 0d | ELECTRICAL [242.4 h]; Cost |  |  |  |  |  |  | G01TR26005C0 |  |  | GA | C | 01 | TR | ME | 260 | 05 | PP | BILL 6 | B06 | S1 | 2F | R00 |  | ACF07 | MEP | 260 |  |  | 20 | 2n |  |  |
| G01TR26015C0 |  | GA-01 ; Final Fix, Inst of Ceiling rose (TR RM) | 18d | 2012-03-31 | 2012-04-21 | G01TR09501C0 |  |  |  |  | 110.9d | 0d | ELECTRICAL [34.8 h]; Cost |  |  |  |  |  |  | G01TR26015C0 |  |  | GA | C | 01 | TR | ME | 260 | 15 | PP | BILL 6 | B06 | S1 | FF | R00 |  | ACF07 | MEP | 260 |  |  |  | FF |  |  |
| G01TR26019C0 |  | GA-01 ; Final Fix, Inst of Light fittings (TR RM) | 18d | 2012-03-31 | 2012-04-21 | G01TR09501C0 |  |  |  |  | 110.9d | 0d | ELECTRICAL [7791.6 h]; Cost |  |  |  |  |  |  | G01TR26019C0 |  |  | GA | C | 01 | TR | ME | 260 | 19 | PP | BILL 6 | B06 | S1 | FF | R00 |  | ACF07 | MEP | 260 |  |  |  | FF |  |  |
| G01TR26076C0 |  | GA-01 ; Final Fix, Lighting fittings (TR RM) | 18d | 2012-03-31 | 2012-04-21 | G01TR09501C0 |  |  |  |  | 110.9d | 0d | ELECTRICAL [7791.6 h]; Cost |  |  |  |  | 420 | 20001170 | G01TR26076C0 |  |  | GA | C | 01 | TR | ME | 260 | 76 | PP | BILL 6 | B06 | S1 | FF | R00 |  | ACF07 | MEP | 260 |  |  |  | FF |  |  |
| G01TR27002C0 |  | GA-01 ; 2nd Fix, Dressing of ELV panels (TR RM) | 30d | 2012-03-31 | 2012-05-05 | G01TR09205C0, G01TR27020C0 SS |  |  |  |  | 104.9d | 0d | ELECTRICAL [79.2 h]; Cost |  |  |  |  |  |  | G01TR27002C0 |  |  | GA | C | 01 | TR | ME | 270 | 02 | PP | BILL 6 | B06 | S1 | 2F | R00 |  | ACF07 | MEP | 270 |  |  |  | 2n |  |  |
| G01TR27020C0 |  | GA-01 ; 2nd Fix, Inst of ELV Equipment (Panels) (TR RM) | 30d | 2012-03-31 | 2012-05-05 | G01TR09501C0 |  |  |  |  | 104.9d | 0d | ELECTRICAL [1618.8 h]; Cost |  |  |  |  |  |  | G01TR27020C0 |  |  | GA | C | 01 | TR | ME | 270 | 20 | PP | BILL 6 | B06 | S1 | 2F | R00 |  | ACF04 | MEP | 270 |  |  |  | 2n | E |  |
| G01TR01006C0 |  | GA-01 ; 2nd, Ceiling Inspection by Consultants (TR RM) | 0d | 2012-04-21 | 2012-04-21 | G01TR23009C0, G01TR23011C0, G01TR23013C0, G01TR26007C0, G01TR23003C0, G01TR23074C0, G01TR26015C0, G01TR26019C0, G01TR26076C0, G01TR26013C0 |  |  |  |  | 110.9d | 12d | Cost |  |  |  |  |  |  | G01TR01006C0 |  |  | GA | C | 01 | TR | ME | 010 | 06 | PP | BILL 6 | B06 | S1 | CI | R00 |  | ACF07 | MEP | 010 |  |  |  | 2n |  |  |
| G01TR09503C0 |  | GA-01 ; Ceiling closure (TR RM) | 12d | 2012-05-05 | 2012-05-19 | G01TR01006C0, G01TR09501C0, G01TR21115C0, G01TR26005C0, G01TR26007C0, G01TR26026C0, G01TR26027C0, G01TR23023C0 |  |  |  |  | 98.9d | 0d | ASSORTED CEILING FINISH [3.08 h]; CEILING GYPSUM [0.2 h]; ASSORTED CEILING FINISH [5 m2]; CEILING GYPSUM [1 m2]; Cost |  |  |  |  | 337 | 20001080 | G01TR09503C0 |  |  | GA | C | 01 | TR | CE | 095 | 03 | PP | BILL 6 | B06 | S1 | 02 | R00 |  | ACF06 |  | 095 |  |  |  |  |  |  |
| G01TR27030C0 |  | GA-01 ; Final Fix, Inst of ELV device (Detector/Speaker) (TR RM) | 18d | 2012-05-05 | 2012-05-26 | G01TR27002C0 |  |  |  |  | 104.9d | 6d | ELECTRICAL [710.4 h]; Cost |  |  |  |  |  |  | G01TR27030C0 |  |  | GA | C | 01 | TR | ME | 270 | 30 | PP | BILL 6 | B06 | S1 | FF | R00 |  | ACF07 | MEP | 270 |  |  |  | FF |  |  |
| G01TR09905C0 |  | GA-01 ; Ceiling Prime & 1st coat (TR RM) | 18d | 2012-05-19 | 2012-06-09 | G01TR09503C0 |  |  |  |  | 98.9d | 0d | CEILING PAINT [2 h]; CEILING PAINT [1 m2]; Cost |  |  |  |  | 362 | 1313 | G01TR09905C0 |  |  | GA | C | 01 | TR | PA | 099 | 05 | PP | BILL 6 | B06 | S1 | 01 | R00 |  | ACF06 |  | 099 |  |  |  |  |  |  |
| G01TR26017C0 |  | GA-01 ; Final Fix, Inst of Switch/Sockets (TR RM) | 12d | 2012-05-19 | 2012-06-02 | G01TR09901C0, G01TR09503C0 |  |  |  |  | 98.9d | 0d | ELECTRICAL [132 h]; Cost |  |  |  |  |  |  | G01TR26017C0 |  |  | GA | C | 01 | TR | ME | 260 | 17 | PP | BILL 6 | B06 | S1 | FF | R00 |  | ACF07 | MEP | 260 |  |  |  | FF |  |  |
| G01TR01802C0 |  | GA-01 ; MEP de-snag, FIREM sign-off | 18d | 2012-06-02 | 2012-06-24 | G01TR26017C0, G01TR23074C0, G01TR23003C0, G01TR26076C0, G01TR26013C0, G01TR26015C0, G01TR26019C0, G01TR27030C0 |  |  |  |  | 98.9d | 0d | TESTING & COMMISSIONING [510 h]; Cost |  |  |  |  |  |  | S05CO01851C0 |  |  | GA | C | 01 | TR | SC | 018 | 53 | PP | BILL 6 | B06 | S1 | 01 | R00 |  | ACF07 |  | 018 |  |  |  |  |  |  |
| G01TR09907C0 |  | GA-01 ; Ceiling - Final paint (TR RM) | 12d | 2012-06-09 | 2012-06-24 | G01TR09905C0 |  |  |  |  | 98.9d | 0d | CEILING PAINT [2 h]; CEILING PAINT [1 m2]; Cost |  |  |  |  | 363 | 1314 | G01TR09907C0 |  |  | GA | C | 01 | TR | PA | 099 | 07 | PP | BILL 6 | B06 | S1 | 02 | R00 |  | ACF06 |  | 099 |  |  |  |  |  |  |
| G01TR01801C0 |  | GA-01 ; Touch-up & Clean / JV inspection /CIR /De-snag | 24d | 2012-06-24 | 2012-07-22 | G01TR01802C0, G01TR08709C0, G01TR09601C0, G01TR09903C0, G01TR09907C0 |  |  |  |  | 98.9d | 0d | TESTING & COMMISSIONING [128 h]; Cost |  |  |  |  | 396 |  | G01TR01851C0 |  |  | GA | C | 01 | TR | SC | 018 | 51 | PP | BILL 6 | B06 | S1 | 02 | R00 |  | ACF07 |  | 018 |  |  |  |  |  |  |
| G01TR01803C0 |  | GA-01 ; Consultant's final de-snag inspection | 12d | 2012-07-22 | 2012-08-05 | G01TR01801C0 |  |  |  |  | 98.9d | 68.65d | Labor General [1 h]; Cost |  |  |  |  |  |  | CP3TS01803C0 |  |  | GA | C | 01 | TR | SC | 018 | 03 | PP | BILL 6 | B06 | S1 | 03 | R00 |  | ACF07 |  | 018 |  |  |  |  |  |  |

| ID | WBS | Activity | Duration | Start | Finish | Predecessors | Complete | Remaining | Planned start | Planned finish | Total float | Free float | Resources | Cost | Actual cost | user_number8 | user_integer1 | user_integer2 | user_number7 | Change Order # | NEW ACTIVITY ID | change id | RENZ % COMPLETE | Claimed This Month | P_811 | P_711 | CCAD BUILDING(SET) | CCAD PHASE(SET) | CCAD FLOOR(SET) | CCAD ZONE(SET) | CCAD WORK(SET) | CCAD SECTION(SET) | CCAD SERIAL No.(SET) | CCAD RESPONSIBILITY(SET) | CCAD CBS(SET) | CCAD BILL(SET) | CCAD HANDOVER(SET) | CCAD TAG(SET) | CCAD REV(SET) | CCAD (VO) | CCADACF (SET) | CCAD CSA | CCAD SSCF | Act Selector % | CCAD DIVISION(SET) | July2011 Target% Complete | CCAD SUB ZONE MEP(SET) | CCAD MEQ |
| --- | --- | --- | --- | --- | --- | --- | --- | --- | --- | --- | --- | --- | --- | --- | --- | --- | --- | --- | --- | --- | --- | --- | --- | --- | --- | --- | --- | --- | --- | --- | --- | --- | --- | --- | --- | --- | --- | --- | --- | --- | --- | --- | --- | --- | --- | --- | --- | --- |
|  | 03 | **Public Area ( Elev.Lobby & Corridors )** |  | 2011-05-22 | 2013-01-09 |  |  |  |  |  |  |  |  |  |  |  |  |  |  |  |  |  |  |  |  |  |  |  |  |  |  |  |  |  |  |  |  |  |  |  |  |  |  |  |  |  |  |  |
| G01PA09201C50 |  | GA-01 ; Metal Studs (Public Area) | 12d | 2011-05-22 A | 2011-10-02 | G01PA23001C50 SS+12d | 85% | 1.8d | 2011-07-03 | 2011-07-17 | 124.08d | 0d | PARTITIONS [549 h]; PARTITIONS - Metal Studs [57 m]; Cost |  |  | 0 | 0 | 0 | 0 | 313 | 944 | S08PA09201C0 | 5 | 2370.65 | 40 | 20 | GA | C | 01 | PA | PT | 092 | 01 | PP | BILL 6 | B06 | S1 | 1F | R00 | CP | ACF06 | GP | 092 | PMS |  |  |  |  |
| G01PA09203C50 |  | GA-01 ; Partitions early wall & 1st face (Public Area) | 32d | 2011-06-19 A | 2011-10-29 | G01PA09201C50 | 30% | 22.4d | 2011-06-19 | 2011-07-26 | 149.68d | 100d | PARTITIONS [57 m]; PARTITIONS [435 h]; Cost |  |  | 0 | 0 | 0 | 0 | 314 | 945 | S08PA09203C0 |  | 3318.91 | 15 | 5 | GA | C | 01 | PA | PT | 092 | 03 | PP | BILL 6 | B06 | S1 | 2F | R00 | CP | ACF06 | GP | 092 | P1F |  |  |  |  |
| G01PA08103C50 |  | GA-01 ; Door Frames (Public Area) | 36d | 2011-07-10 A | 2012-03-01 | G01PA09201C50, GNHE08101C0 FS+149d | 5% | 34.2d | 2011-07-26 | 2011-09-08 | 49.68d | 0d | ASSORTED DOORS [41 h]; Cost |  |  |  |  |  |  | 316 | 947 | S08PA08103C0 |  |  |  |  | GA | C | 01 | PA | DO | 081 | 03 | PP | BILL 6 | B06 | S1 | DF | R00 | CP | ACF06 |  | 081 |  | 08 |  |  |  |
| G01PA21111C50 |  | GA-01 ; 1st Fix, Inst of Sprinkler main pipe (Public Area) | 200d | 2011-07-10 A | 2011-12-17 | G01PA22005C50 SS+12d, G01PA23001C50 | 90% | 20d | 2011-10-01 | 2012-05-28 | 60d | 0d | MECHANICAL [876 h]; Cost [29558 AED] | 29,557.99 | 26,602.19 |  |  |  |  |  |  | S08PA21111C0 |  | 33716.92 | 90 | 65 | GA | C | 01 | PA | ME | 211 | 11 | PP | BILL 6 | B06 | S1 | 1F | R00 | CP | ACF04 | MEP | 211 | M1F |  | 60 | 1S |  |
| G01PA21117C50 |  | GA-01 ; 1st Fix, Inst of Sprinkler branch pipe (Public Area) | 156d | 2011-07-10 A | 2012-01-15 | G01PA09201C50, G01PA21111C50 | 85% | 23.4d | 2011-11-19 | 2012-05-22 | 172.6d | 122.92d | MECHANICAL [931.2 h]; Cost [50874.3 AED] | 50,874.31 | 43,243.17 | 0 | 0 | 0 | 0 |  |  | S08PA21117C0 |  | 35386.97 | 75 | 65 | GA | C | 01 | PA | ME | 211 | 17 | PP | BILL 6 | B06 | S1 | 1F | R00 | CP | ACF04 | MEP | 211 | M1F |  | 65 | 1S |  |
| G01PA22019C50 |  | GA-01 ; 1st Fix, Inst of Drainage pipe (ceiling) (Public Area) | 90d | 2011-07-10 A | 2011-12-06 | G01PA23001C50, G01PA26013C0 SS+12d | 75% | 22.5d | 2011-09-08 | 2011-12-27 | 60d | 0d | PLUMBING [823.2 h]; Cost [35208.5 AED] | 35,208.51 | 26,406.39 | 0 | 0 | 0 | 0 |  |  | S08PA22019C0 |  | 18378.88 | 60 | 35 | GA | C | 01 | PA | ME | 220 | 19 | PP | BILL 6 | B06 | S1 | 1F | R00 | CP | ACF04 | MEP | 220 | M1F |  | 75 | 1S |  |
| G01PA23001C50 |  | GA-01 ; 1st Fix, Inst. of Supports for MEP (Public Area) | 200d | 2011-07-10 A | 2011-10-23 | G01S107807C0, G01S207807C0 | 90% | 20d | 2011-06-30 | 2012-02-28 | 60d | 0d | MECHANICAL [2642.4 h]; Cost [28834.6 AED] | 28,834.58 | 25,951.13 |  |  |  |  |  |  | S08PA23001C0 |  |  | 90 | 80 | GA | C | 01 | PA | ME | 230 | 01 | PP | BILL 6 | B06 | S1 | 1F | R00 | CP | ACF04 | MEP | 230 | M1F |  | 85 | 1S |  |
| G01PA23023C50 |  | GA-01 ; 1st Fix, Inst of Main Ducting (Public Area) | 90d | 2011-07-10 A | 2012-01-09 | G01PA23001C50, G01PA23017C50 SS+7d | 65% | 31.5d | 2011-10-20 | 2012-02-09 | 123.5d | 0d | MECHANICAL [7458 h]; Cost [407301 AED] | 407,300.87 | 285,110.61 | 0 | 0 | 0 | 0 |  |  | S08PA23023C0 |  |  | 50 | 5 | GA | C | 01 | PA | ME | 230 | 23 | PP | BILL 6 | B06 | S1 | 1F | R00 | CP | ACF04 | MEP | 230 | M1F |  | 45 | 1S |  |
| G01PA26001C0 |  | GA-01 ; 1st Fix, Inst of Trunking/Conduiting (Public Area) | 90d | 2011-07-10 A | 2011-12-10 | G01PA23001C50, G01S107807C0, G01S207807C0 | 60% | 36d | 2011-07-28 | 2011-11-15 | 60d | 0d | ELECTRICAL [2217.6 h]; Cost [24536.7 AED] | 24,536.7 | 14,722.02 | 0 | 0 | 0 | 0 |  |  | S08PA26001C0 |  |  | 50 | 20 | GA | C | 01 | PA | ME | 260 | 01 | PP | BILL 6 | B06 | S1 | 1F | R00 | CP | ACF04 | MEP | 260 | M1F |  | 45 | 1S |  |
| G01PA26005C0 |  | GA-01 ; 2nd Fix, Wiring for Power/Lighting/Emergency (Public Area) | 60d | 2011-08-10 A | 2012-05-17 | G01PA09205C50 | 50% | 30d | 2011-12-21 | 2012-03-03 | 127.68d | 0d | ELECTRICAL [242.4 h]; Cost [12852.6 AED] | 12,852.56 | 6,426.28 | 0 | 0 | 0 | 0 |  |  | S08PA26005C0 |  |  | 20 | 0 | GA | C | 01 | PA | ME | 260 | 05 | PP | BILL 6 | B06 | S1 | 2F | R00 | CP | ACF07 | MEP | 260 |  |  |  | 2n |  |
| G01PA26013C0 |  | GA-01 ; 1st Fix, Inst of Cable Tray (Public Area) | 54d | 2011-09-05 A | 2012-01-07 | G01PA23001C50, G01PA27010C50 SS+10d, G01S107807C0, G01S207807C0 | 10% | 48.6d | 2011-10-06 | 2011-12-13 | 60d | 0d | ELECTRICAL [244.8 h]; Cost [13923.6 AED] | 13,923.6 | 1,392.36 |  |  |  |  |  |  | S08PA26013C0 |  | 7187.77 |  |  | GA | C | 01 | PA | ME | 260 | 13 | PP | BILL 6 | B06 | S1 | 1F | R00 |  | ACF04 | MEP | 260 | M1F |  | 45 | 1S |  |
| G01PA22011C50 |  | GA-01 ; 2nd Fix, Drainage/Water pipe (wall) (Public Area) | 48d | 2011-10-02 | 2011-12-01 | G01PA09201C50 |  |  |  |  | 124.08d | 74.4d | PLUMBING [644.4 h]; Cost |  |  |  |  |  |  |  |  | S08PA22011C0 | 20 | 2041.75 |  |  | GA | C | 01 | PA | ME | 220 | 11 | PP | BILL 6 | B06 | S1 | 2F | R00 |  | ACF07 | MEP | 220 |  |  | 45 | 2n |  |
| G01PA26009C0 |  | GA-01 ; 2nd Fix, Inst of Wall conduites (Public Area) | 48d | 2011-10-02 | 2011-12-01 | G01PA09201C50 |  |  |  |  | 124.08d | 74.4d | ELECTRICAL [451.2 h]; Cost |  |  |  |  |  |  |  |  | S08PA26009C0 |  | 1475.89 |  |  | GA | C | 01 | PA | ME | 260 | 09 | PP | BILL 6 | B06 | S1 | 2F | R00 |  | ACF07 | MEP | 260 |  |  | 15 | 2n |  |
| G01PA27010C50 |  | GA-01 ; 1st Fix, Inst of Trunking for ELV system (Public Area) | 54d | 2011-10-24 | 2011-12-31 | G01PA23001C50, G01PA26001C0 SS+12d, G01S107807C0, G01S207807C0 |  |  |  |  | 60d | 0d | ELECTRICAL [1467.6 h]; Cost |  |  |  |  |  |  |  |  | S08PA27010C0 |  | 42612.29 |  |  | GA | C | 01 | PA | ME | 270 | 10 | PP | BILL 6 | B06 | S1 | 1F | R00 |  | ACF04 | MEP | 270 | M1F |  | 25 | 1S |  |
| G01PA22005C50 |  | GA-01 ; 1st Fix, Inst of Water supply pipe (ceiling) (Public Area) | 54d | 2011-11-05 | 2012-01-12 | G01PA22019C50 SS+7d, G01PA23001C50 |  |  |  |  | 60d | 0d | PLUMBING [500.4 h]; Cost |  |  |  |  |  |  |  |  | S08PA22005C0 | 5 | 1586.56 |  |  | GA | C | 01 | PA | ME | 220 | 05 | PP | BILL 6 | B06 | S1 | 1F | R00 |  | ACF04 | MEP | 220 | M1F |  | 60 | 1S |  |
| G01PA23017C50 |  | GA-01 ; 1st Fix, Inst of CHW pipe (Public Area) | 54d | 2011-11-22 | 2012-01-26 | G01PA21111C50 SS+10d, G01PA23001C50 |  |  |  |  | 60d | 0d | MECHANICAL [1650 h]; Cost |  |  |  |  |  |  |  |  | S08PA23017C0 |  | 5226.31 |  |  | GA | C | 01 | PA | ME | 230 | 17 | PP | BILL 6 | B06 | S1 | 1F | R00 |  | ACF04 | MEP | 230 | M1F |  | 45 | 1S |  |
| G01PA27001C50 |  | GA-01 ; 1st Fix, Wiring/ Cabling work (Public Area) | 54d | 2012-01-07 | 2012-03-11 | G01PA26001C0, G01PA26013C0, G01PA27010C50 |  |  |  |  | 125.4d | 75.72d | ELECTRICAL [242.4 h]; Cost |  |  |  |  |  |  |  |  | S08PA27001C0 |  |  |  |  | GA | C | 01 | PA | ME | 270 | 01 | PP | BILL 6 | B06 | S1 | 1F | R00 |  | ACF04 | MEP | 270 | M1F |  | 15 | 1S |  |
| G01PA23008C50 |  | GA-01 ; 1st Fix, Inst of VCD's/FD's (Public Area) | 54d | 2012-01-09 | 2012-03-13 | G01PA23023C50 |  |  |  |  | 123.5d | 73.83d | MECHANICAL [673.2 h]; Cost |  |  |  |  |  |  |  |  | S08PA23008C0 |  |  |  |  | GA | C | 01 | PA | ME | 230 | 08 | PP | BILL 6 | B06 | S1 | 1F | R00 |  | ACF04 | MEP | 230 | M1F |  |  | 1S |  |
| G01PA23009C50 |  | GA-01 ; 2nd Fix, Inst of VAV'S CHW connection (Public Area) | 48d | 2012-01-28 | 2012-03-24 | G01PA23017C50 |  |  |  |  | 60d | 0d | MECHANICAL [788.4 h]; Cost |  |  |  |  |  |  |  |  | S08PA23009C0 |  |  |  |  | GA | C | 01 | PA | ME | 230 | 09 | PP | BILL 6 | B06 | S1 | 2F | R00 |  | ACF07 | MEP | 230 |  |  | 45 | 2n |  |
| G01PA01005C50 |  | GA-01 ; 2nd, Wall Inspection by Consultant (Public Area) | 0d | 2012-03-01 | 2012-03-01 | G01PA08103C50 FF, G01PA22011C50, G01PA26009C0 |  |  |  |  | 49.68d | 0d | Cost |  |  |  |  |  |  |  |  | S08PA01005C0 |  |  |  |  | GA | C | 01 | PA | ME | 010 | 05 | PP | BILL 6 | B06 | S1 | WI | R00 |  | ACF07 | MEP | 010 |  |  |  | 2n |  |
| G01PA09205C50 |  | GA-01 ; Partitions Closing (Public Area) | 36.12d | 2012-03-01 | 2012-04-12 | G01PA01005C50, G01PA09203C50, G01PA22005C50, G01PA22019C50, GAFOA09208C1 FF, G01PA08103C50 FF |  |  |  |  | 49.68d | 0d | PARTITIONS [57 m]; PARTITIONS [561 h]; Cost |  |  |  |  |  |  | 315 | 946 | S08PA09205C0 |  |  |  |  | GA | C | 01 | PA | PT | 092 | 05 | PP | BILL 6 | B06 | S1 | FF | R00 |  | ACF06 | GP | 092 | P2F |  |  |  |  |
| G01PA23015C50 |  | GA-01 ; 2nd Fix, Insulation of CHW pipe & Duct (Public Area) | 54d | 2012-03-25 | 2012-05-26 | G01PA23009C50, G01PA23017C50, G01PA23023C50 |  |  |  |  | 60d | 10.32d | MECHANICAL [1699.2 h]; Cost |  |  |  |  |  |  |  |  | S08PA23015C0 |  |  |  |  | GA | C | 01 | PA | ME | 230 | 15 | PP | BILL 6 | B06 | S1 | 2F | R00 |  | ACF07 | MEP | 230 |  |  |  | 2n |  |
| G01PA09901C50 |  | GA-01 ; Wall Prime & 1st coat (Public Area) | 30d | 2012-04-12 | 2012-05-17 | G01PA09205C50 |  |  |  |  | 67.68d | 0d | WALL PAINT [37 h]; WALL PAINT [46 m2]; Cost |  |  |  |  |  |  | 328 | 956 | S08PA09901C0 |  |  |  |  | GA | C | 01 | PA | PA | 099 | 01 | PP | BILL 6 | B06 | S1 | 01 | R00 |  | ACF06 |  | 099 |  |  |  |  |  |
| G01PA23011C50 |  | GA-01 ; 2nd Fix, Inst of Equipment (FCU,FAN) (Public Area) | 48d | 2012-04-12 | 2012-06-07 | G01PA09205C50 |  |  |  |  | 49.68d | 0d | MECHANICAL [406.8 h]; Cost |  |  |  |  |  |  |  |  | S08PA23011C0 |  |  |  |  | GA | C | 01 | PA | ME | 230 | 11 | PP | BILL 6 | B06 | S1 | 2F | R00 |  | ACF04 | MEP | 230 |  |  |  | 2n | H |
| G01PA26007C0 |  | GA-01 ; 2nd Fix, Cable Pulling (Public Area) | 48d | 2012-04-12 | 2012-06-07 | G01PA09201C50 SS+6d, G01PA09205C50 |  |  |  |  | 139.68d | 90d | ELECTRICAL [1117.2 h]; Cost |  |  |  |  |  |  |  |  | S08PA26007C0 |  | 3750.85 |  |  | GA | C | 01 | PA | ME | 260 | 07 | PP | BILL 6 | B06 | S1 | 2F | R00 |  | ACF07 | MEP | 260 |  |  | 25 | 2n |  |
| G01PA26011C0 |  | GA-01 ; 2nd Fix, Inst of Equipment (DB) (Public Area) | 60d | 2012-04-12 | 2012-06-23 | G01PA09205C50 |  |  |  |  | 49.8d | 0d | ELECTRICAL [524.4 h]; Cost |  |  |  |  |  |  |  |  | S08PA26011C0 |  |  |  |  | GA | C | 01 | PA | ME | 260 | 11 | PP | BILL 6 | B06 | S1 | 2F | R00 |  | ACF04 | MEP | 260 |  |  |  | 2n | E |
| G01PA26053C0 |  | GA-01 ; 2nd Fix, Wiring / Cabling (Public Area) | 48d | 2012-04-12 | 2012-06-07 | G01PA09203C50, G01PA09205C50 |  |  |  |  | 139.68d | 90d | ELECTRICAL [242.4 h]; Cost |  |  |  |  |  |  | 389 | 977 | S08PA26053C0 |  |  |  |  | GA | C | 01 | PA | ME | 260 | 53 | PP | BILL 6 | B06 | S1 | 2F | R00 |  | ACF07 | MEP | 260 |  |  |  | 2n |  |
| G01PA27020C50 |  | GA-01 ; 2nd Fix, Inst of ELV Equipment (Panels) (Public Area) | 48d | 2012-04-12 | 2012-06-07 | G01PA09205C50 |  |  |  |  | 61.8d | 12d | ELECTRICAL [1618.8 h]; Cost |  |  |  |  |  |  |  |  | S08PA27020C0 |  |  |  |  | GA | C | 01 | PA | ME | 270 | 20 | PP | BILL 6 | B06 | S1 | 2F | R00 |  | ACF04 | MEP | 270 |  |  |  | 2n | E |
| G01PA05501C50 |  | GA-01 ; Handrails & balustrade (Public Area) | 36.12d | 2012-05-17 | 2012-06-30 | G01PA09901C50, GAFT1805509C0, GAFT1405509C0, GAFT1705509C0 |  |  |  |  | 75.43d | 17.88d | SECONDARY STEEL [131 h]; Cost |  |  |  |  |  |  |  |  | S08PA05501C0 |  |  |  |  | GA | C | 01 | PA | SW | 055 | 01 | PP | BILL 6 | B06 | S1 | 01 | R00 |  | ACF03 |  | a |  |  |  |  |  |
| G01PA26015C0 |  | GA-01 ; Final Fix, Termination & Gladding of Cables (Public Area) | 30d | 2012-05-17 | 2012-06-23 | G01PA26005C0 |  |  |  |  | 127.68d | 78d | ELECTRICAL [62.4 h]; Cost |  |  |  |  |  |  |  |  | S08PA26015C0 |  |  |  |  | GA | C | 01 | PA | ME | 260 | 15 | PP | BILL 6 | B06 | S1 | FF | R00 |  | ACF07 | MEP | 260 |  |  |  | FF |  |
| G01PA09501C50 |  | GA-01 ; Ceiling Grid and Service Tile (Public Area) | 36d | 2012-06-07 | 2012-07-21 | G01PA09205C50 SS+15d, G01PA21117C50, G01PA23008C50, G01PA23009C50, G01PA23015C50, G01PA27001C50, G01PA23011C50, G01PA09901C50 |  |  |  |  | 49.68d | 0d | CEILING GRID FOR GYPSUM [97.4 h]; CEILING GRID FOR GYPSUM [8.52 m2]; Cost |  |  |  |  |  |  | 323 | 952 | S08PA09501C0 |  |  |  |  | GA | C | 01 | PA | CE | 095 | 01 | PP | BILL 6 | B06 | S1 | 01 | R00 |  | ACF06 |  | 095 |  |  |  |  |  |
| G01PA23021C50 |  | GA-01 ; 2nd Fix, Inst of Flexible Duct & Plenum boxes (Public Area) | 54d | 2012-06-14 | 2012-08-18 | G01PA09205C50, G01PA09501C50 SS+6d |  |  |  |  | 79.68d | 24d | MECHANICAL [1962 h]; Cost |  |  |  |  |  |  |  |  | S08PA23021C0 |  |  |  |  | GA | C | 01 | PA | ME | 230 | 21 | PP | BILL 6 | B06 | S1 | 2F | R00 |  | ACF07 | MEP | 230 |  |  |  | 2n |  |
| G01PA09701C50 |  | GA-01 ; Wall finishes (ST, WD, WC) (Public Area) | 36d | 2012-06-23 | 2012-08-04 | G01PA26011C0, G01PA27020C50, G02CO04405C0, G01CO04404C0 |  |  |  |  | 49.8d | 0d | ASSORTED WALL FINISH [470 h]; ASSORTED WALL FINISH [539 m2]; Cost |  |  |  |  |  |  | 105 | 1002 | S08PA09701C0 |  |  |  |  | GA | C | 01 | PA | WF | 097 | 01 | PP | BILL 6 | B06 | S1 | 01 | R00 |  | ACF06 |  | 097 |  |  |  |  |  |
| G01PA09601C50 |  | GA-01 ; Flooring (stone) (Public Area) | 42d | 2012-07-21 | 2012-09-10 | G01PA09205C50, G01CO04404C0, G01PA09501C50, G01PA05501C50 |  |  |  |  | 57.55d | 0d | RUBBER FLOOR [48 h]; RUBBER FLOOR [102 m2]; Cost |  |  |  |  |  |  | 326 | 955 | S08PA09601C0 |  |  |  |  | GA | C | 01 | PA | FF | 096 | 01 | PP | BILL 6 | B06 | S1 | 03 | R00 |  | ACF06 |  | ST |  |  |  |  |  |
| G01PA09905C50 |  | GA-01 ; Ceiling Prime & 1st coat (Public Area) | 30d | 2012-07-21 | 2012-08-27 | G01PA09501C50 |  |  |  |  | 89.68d | 0d | CEILING PAINT [17 h]; CEILING PAINT [19 m2]; Cost |  |  |  |  |  |  | 330 | 958 | S08PA09905C0 |  |  |  |  | GA | C | 01 | PA | PA | 099 | 05 | PP | BILL 6 | B06 | S1 | 01 | R00 |  | ACF06 |  | 099 |  |  |  |  |  |
| G01PA21115C50 |  | GA-01 ; 2nd Fix, Inst of Sprinkler droppers (Public Area) | 48d | 2012-07-21 | 2012-09-17 | G01PA09501C50 |  |  |  |  | 55.68d | 0d | MECHANICAL [1734 h]; Cost |  |  |  |  |  |  |  |  | S08PA21115C0 |  |  |  |  | GA | C | 01 | PA | ME | 211 | 15 | PP | BILL 6 | B06 | S1 | 2F | R00 |  | ACF07 | MEP | 211 |  |  |  | 2n |  |
| G01PA23019C50 |  | GA-01 ; Final Fix, Inst of Grilles & Diffusers (Public Area) | 36d | 2012-07-21 | 2012-09-03 | G01PA09501C50, G01PA23021C50 SS+6d |  |  |  |  | 67.68d | 18d | MECHANICAL [1030.8 h]; Cost |  |  |  |  |  |  |  |  | S08PA23019C0 |  |  |  |  | GA | C | 01 | PA | ME | 230 | 19 | PP | BILL 6 | B06 | S1 | FF | R00 |  | ACF07 | MEP | 230 |  |  |  | FF |  |
| G01PA26017C0 |  | GA-01 ; Final Fix, Inst of Ceiling rose (Public Area) | 30d | 2012-07-21 | 2012-08-27 | G01PA09501C50 |  |  |  |  | 49.68d | 0d | ELECTRICAL [34.8 h]; Cost |  |  |  |  |  |  |  |  | S08PA26017C0 |  |  |  |  | GA | C | 01 | PA | ME | 260 | 17 | PP | BILL 6 | B06 | S1 | FF | R00 |  | ACF07 | MEP | 260 |  |  |  | FF |  |
| G01PA27002C50 |  | GA-01 ; 2nd Fix, Wiring Droppers (Public Area) | 48d | 2012-07-21 | 2012-09-17 | G01PA09501C50 |  |  |  |  | 55.68d | 0d | ELECTRICAL [242.4 h]; Cost |  |  |  |  |  |  |  |  | S08PA27002C0 |  |  |  |  | GA | C | 01 | PA | ME | 270 | 02 | PP | BILL 6 | B06 | S1 | 2F | R00 |  | ACF07 | MEP | 270 |  |  |  | 2n |  |
| G01PA21113C50 |  | GA-01 ; Final Fix, Inst of Sprinklers head/ Extinguisher (Public Area) | 30d | 2012-07-28 | 2012-09-03 | G01PA09501C50, G01PA21115C50 SS+6d |  |  |  |  | 67.68d | 18d | MECHANICAL [297.6 h]; Cost |  |  |  |  |  |  |  |  | S08PA21113C0 |  |  |  |  | GA | C | 01 | PA | ME | 211 | 13 | PP | BILL 6 | B06 | S1 | FF | R00 |  | ACF07 | MEP | 211 |  |  |  | FF |  |
| G01PA26003C0 |  | GA-01 ; Final Fix, Inst of Light fittings (Public Area) | 48d | 2012-07-28 | 2012-09-24 | G01PA09501C50, G01PA26017C0 SS+6d |  |  |  |  | 49.68d | 0d | ELECTRICAL [7791.6 h]; Cost |  |  |  |  |  |  |  |  | S08PA26003C0 |  |  |  |  | GA | C | 01 | PA | ME | 260 | 03 | PP | BILL 6 | B06 | S1 | FF | R00 |  | ACF07 | MEP | 260 |  |  |  | FF |  |
| G01PA27030C50 |  | GA-01 ; Final Fix, Inst of ELV devise (Detector/Speaker) (Public Area) | 30d | 2012-07-28 | 2012-09-03 | G01PA09501C50, G01PA27002C50 SS+6d |  |  |  |  | 67.68d | 18d | ELECTRICAL [710.4 h]; Cost |  |  |  |  |  |  |  |  | S08PA27030C0 |  |  |  |  | GA | C | 01 | PA | ME | 270 | 30 | PP | BILL 6 | B06 | S1 | FF | R00 |  | ACF07 | MEP | 270 |  |  |  | FF |  |
| G01PA09903C50 |  | GA-01 ; Wall Final Paint (Public Area) | 30d | 2012-08-27 | 2012-10-01 | G01PA09901C50, G01PA09905C50 |  |  |  |  | 89.68d | 40d | WALL PAINT [21 h]; WALL PAINT [25 m2]; Cost |  |  |  |  |  |  | 329 | 957 | S08PA09903C0 |  |  |  |  | GA | C | 01 | PA | PA | 099 | 03 | PP | BILL 6 | B06 | S1 | 02 | R00 |  | ACF06 |  | 099 |  |  |  |  |  |
| G01PA08107C50 |  | GA-01 ; Doors (Public Area) | 36d | 2012-09-10 | 2012-10-22 | G01PA08103C50, G01PA09901C50, G01PA09601C50 |  |  |  |  | 57.55d | 0d | ASSORTED DOORS [60 h]; ASSORTED DOORS [6 no]; Cost |  |  |  |  |  |  | 317 | 948 | S08PA08107C0 |  |  |  |  | GA | C | 01 | PA | DO | 081 | 07 | PP | BILL 6 | B06 | S1 | DR | R00 |  | ACF06 |  | 081 |  | 08 |  |  |  |
| G01PA01006C50 |  | GA-01 ; 2nd, Ceiling Inspection by Consultants (Public Area) | 0d | 2012-09-24 | 2012-09-24 | G01PA21115C50, G01PA23009C50, G01PA23011C50, G01PA23015C50, G01PA27002C50, G01PA09501C50, G01PA21113C50, G01PA23019C50, G01PA26003C0, G01PA26017C0, G01PA27030C50, G01PA26015C0 |  |  |  |  | 49.68d | 0d | Cost |  |  |  |  |  |  |  |  | S08PA01006C0 |  |  |  |  | GA | C | 01 | PA | ME | 010 | 06 | PP | BILL 6 | B06 | S1 | CI | R00 |  | ACF07 | MEP | 010 |  |  |  | 2n |  |
| G01PA09503C50 |  | GA-01 ; Ceiling closure - ACT/Gypsum (Public Area) | 16d | 2012-09-24 | 2012-10-13 | G01PA01006C50, G01PA21115C50, G01PA26005C0, G01PA27001C50, G01PA27002C50, GAFOA09507C1, G01PA09701C50, G01PA23021C50, G01PA26053C0, G01PA26007C0, GV10GL09202R2, GV10GL10904R2 |  |  |  |  | 49.68d | 0d | ASSORTED CEILING FINISH [56.58 h]; CEILING GYPSUM [2.87 h]; ASSORTED CEILING FINISH [92 m2]; CEILING GYPSUM [9 m2]; Cost |  |  |  |  |  |  | 324 | 953 | S08PA09503C0 |  |  |  |  | GA | C | 01 | PA | CE | 095 | 03 | PP | BILL 6 | B06 | S1 | 02 | R00 |  | ACF06 |  | 095 |  |  |  |  |  |
| G01PA09674C1 |  | GA-01, Carpet Tile Finish ((Lobby and Office) | 0d | 2012-10-13 | 2012-10-13 | G01PA09907C50 SS, G01PA09903C50 SS |  |  |  |  | 79.68d | 30d | Cost |  |  |  |  |  |  |  |  |  |  |  |  |  | GA | C | 01 | PA | FF | 096 |  |  |  | B06 |  |  | R00 |  | ACF06 | CPT | CPT |  |  |  |  |  |
| G01PA09907C50 |  | GA-01 ; Ceiling Final paint (Public Area) | 18d | 2012-10-13 | 2012-11-05 | G01PA09601C50, G01PA09905C50, G01PA09503C50 |  |  |  |  | 61.68d | 0d | CEILING PAINT [9 h]; CEILING PAINT [10 m2]; Cost |  |  |  |  |  |  | 331 | 959 | S08PA09907C0 |  |  |  |  | GA | C | 01 | PA | PA | 099 | 07 | PP | BILL 6 | B06 | S1 | 02 | R00 |  | ACF06 |  | 099 |  |  |  |  |  |
| G01PA11009C0 |  | GA-01 ; Signage (Public Area) | 14d | 2012-10-13 | 2012-10-31 | G01PA09701C50, G01PA09503C50 |  |  |  |  | 65.68d | 16d | SIGNAGES [7 h]; SIGNAGES [7.05 no]; Cost |  |  |  |  |  |  | 322 | 951 | S08PA11009C0 |  |  |  |  | GA | C | 01 | PA | SA | 110 | 09 | PP | BILL 6 | B06 | S1 | 09 | R00 |  | ACF08 |  | c |  | 08 |  |  |  |
| G01PA26019C0 |  | GA-01 ; Final Fix, Inst of Switch/Sockets (Public Area) | 18d | 2012-10-13 | 2012-11-05 | G01PA09901C50, G01PA09503C50 |  |  |  |  | 49.68d | 0d | ELECTRICAL [132 h]; Cost |  |  |  |  |  |  |  |  | S08PA26019C0 |  |  |  |  | GA | C | 01 | PA | ME | 260 | 19 | PP | BILL 6 | B06 | S1 | FF | R00 |  | ACF07 | MEP | 260 |  |  |  | FF |  |
| G01PA08709C50 |  | GA-01 ; Ironmongery (Public Area) | 14.12d | 2012-10-22 | 2012-11-10 | G01PA08107C50 |  |  |  |  | 57.55d | 7.88d | IRONMONGERY [40 h]; IRONMONGERY [4 no]; Cost |  |  |  |  |  |  | 322 | 951 | S08PA08709C0 |  |  |  |  | GA | C | 01 | PA | DO | 087 | 09 | PP | BILL 6 | B06 | S1 | IM | R00 |  | ACF06 |  | 087 |  | 08 |  |  |  |

| ID | WBS | Activity | Duration | Start | Finish | Predecessors | Complete | Remaining | Planned start | Planned finish | Total float | Free float | Resources | Cost | Actual cost | change id | CCAD BUILDING(SET) | CCAD PHASE(SET) | CCAD FLOOR(SET) | CCAD ZONE(SET) | CCAD WORK(SET) | CCAD SECTION(SET) | CCAD SERIAL No.(SET) | CCAD RESPONSIBILITY(SET) | CCAD CBS(SET) | CCAD BILL(SET) | CCAD HANDOVER(SET) | CCAD TAG(SET) | CCAD REV(SET) | CCADACF (SET) | CCAD SSCF | Change Order # | NEW ACTIVITY ID | Claimed This Month | P_811 | P_711 | CCAD (VO) | CCAD CSA | Act Selector % | user_number8 | user_integer1 | user_integer2 | user_number7 | CCAD DIVISION(SET) | July2011 Target% Complete | CCAD SUB ZONE MEP(SET) | CCAD MEQ | U% |
| --- | --- | --- | --- | --- | --- | --- | --- | --- | --- | --- | --- | --- | --- | --- | --- | --- | --- | --- | --- | --- | --- | --- | --- | --- | --- | --- | --- | --- | --- | --- | --- | --- | --- | --- | --- | --- | --- | --- | --- | --- | --- | --- | --- | --- | --- | --- | --- | --- |
|  | 10 | **Precommissioning Tesing & snagging (Public Area)** |  | 2012-11-05 | 2013-01-09 |  |  |  |  |  |  |  |  |  |  |  |  |  |  |  |  |  |  |  |  |  |  |  |  |  |  |  |  |  |  |  |  |  |  |  |  |  |  |  |  |  |  |  |
| G01TS01801C0 |  | GA-01 ; MEP de-snag, FIREM sign-off | 12d | 2012-11-05 | 2012-11-20 | G01PA26015C0, G01PA21113C50, G01PA23019C50, G01PA26017C0, G01PA26003C0, G01PA27030C50, G01PA26019C0 |  |  |  |  | 49.68d | 0d | TESTING & COMMISSIONING [2040 h]; Cost |  |  | G01TS01801C0 | GA | C | 01 | TS | SC | 018 | 01 | PP | BILL 6 | B06 | S1 | 01 | R00 | ACF07 | 018 |  |  |  |  |  |  |  |  |  |  |  |  |  |  |  |  |  |
| G01TS01802C0 |  | GA-01 ; Touch-up & Clean / JV inspection /CIR /De-snag | 18d | 2012-11-20 | 2012-12-12 | G01PA08709C50, G01PA09601C50, G01PA09701C50, G01PA09903C50, G01PA09907C50, G01PA11009C0, G01TS01801C0, G01PA05501C50, G01PA09503C50, G01PA09674C1, C01E109674C1, C01E209675C1 |  |  |  |  | 49.68d | 0d | TESTING & COMMISSIONING [340 h]; Cost |  |  | G01TS01802C0 | GA | C | 01 | TS | SC | 018 | 02 | PP | BILL 6 | B06 | S1 | 02 | R00 | ACF07 | 018 |  |  |  |  |  |  |  |  |  |  |  |  |  |  |  |  |  |
| G01TS01805C0 |  | GA-01 ; Consultant's final de-snag inspection | 0d | 2013-01-09 | 2013-01-09 | G01TS01802C0, G02TS01803C0 |  |  |  |  | 44.55d | 0d | Cost |  |  | G01TS01803C0 | GA | C | 01 | TS | SC | 018 | 03 | PP | BILL 6 | B06 | S1 | 03 | R00 | ACF07 | 018 |  |  |  |  |  |  |  |  |  |  |  |  |  |  |  |  |  |
|  | 04 | **Mech Room** |  | 2011-06-08 | 2013-01-09 |  |  |  |  |  |  |  |  |  |  |  |  |  |  |  |  |  |  |  |  |  |  |  |  |  |  |  |  |  |  |  |  |  |  |  |  |  |  |  |  |  |  |  |
| G01M109203C10 |  | GA-01 ; Partitions 1st face (Mech RM) | 32.88d | 2011-06-08 A | 2012-01-07 | G01M109201C10 | 30% | 23.01d | 2011-07-19 | 2011-08-25 | 207.19d | 51.99d | PARTITIONS [174 m]; PARTITIONS [1306 h]; Cost |  |  | I05ME09203C0 | GA | C | 01 | M1 | PT | 092 | 03 | PP | BILL 6 | B06 | S1 | 2F | R00 | ACF06 | 092 | 314 | 1463 | 9956.73 | 30 | 25 | CP | GP | P1F |  |  |  |  |  |  |  |  |  |
| G01M109201C10 |  | GA-01 ; Metal Studs (Mech RM) | 20d | 2011-06-09 A | 2011-12-10 | G01M123001C10, G01PA09201C50 | 85% | 3d | 2011-07-05 | 2011-07-27 | 83.8d | 0d | PARTITIONS [1674 h]; PARTITIONS - Metal Studs [174 m]; Cost |  |  | I05ME09201C0 | GA | C | 01 | M1 | PT | 092 | 01 | PP | BILL 6 | B06 | S1 | 1F | R00 | ACF06 | 092 |  |  | 7111.95 | 40 | 35 | CP | GP | PMS | 0 | 0 | 0 | 0 |  |  |  |  |  |
| G01M108101C10 |  | GA-01 ; Metal Door Frames (Mech RM) | 18d | 2011-07-10 A | 2012-02-11 | G01M109201C10, OGNMU00027S0, GNHE08101C0 FS+149d | 5% | 17.1d | 2011-08-27 | 2011-09-18 | 214.9d | 59.7d | METAL DOORS [74 h]; Cost |  |  | I05ME08101C0 | GA | C | 01 | M1 | DO | 081 | 01 | PP | BILL 6 | B06 | S1 | DF | R00 | ACF06 | 081 | 316 | 1465 |  |  |  | CP |  |  |  |  |  |  | 08 |  |  |  |  |
| G01M121111C10 |  | GA-01 ; 1st Fix, Inst of Sprinkler main pipe (Mech RM) | 72d | 2011-07-10 A | 2012-03-19 | G01M122006C10 SS+12d, G01M123001C10 | 30% | 50.4d | 2011-09-18 | 2011-12-15 | 124.15d | 0d | MECHANICAL [541.2 h]; Cost [29558 AED] | 29,557.99 | 8,867.4 | I05ME21111C0 | GA | C | 01 | M1 | ME | 211 | 11 | PP | BILL 6 | B06 | S1 | 1F | R00 | ACF04 | 211 |  |  | 20581.41 |  |  | CP | MEP | M1F |  |  |  |  |  | 85 | 1S |  |  |
| G01M123001C10 |  | GA-01 ; 1st Fix, Inst. of Supports for MEP (Mech RM) | 66d | 2011-07-10 A | 2011-12-06 | G01S107807C0, G01S207807C0 | 20% | 52.8d | 2011-06-30 | 2011-09-17 | 83.8d | 0d | MECHANICAL [511.2 h]; Cost [28834.6 AED] | 28,834.58 | 5,766.92 | I05ME23001C0 | GA | C | 01 | M1 | ME | 230 | 01 | PP | BILL 6 | B06 | S1 | 1F | R00 | ACF04 | 230 |  |  |  |  |  | CP | MEP | M1F |  |  |  |  |  | 80 | 1S |  |  |
| G01M123013C10 |  | GA-01 ; 2nd Fix, Inst of Equipment (AHU) (Mech RM) | 156d | 2011-07-10 A | 2012-01-04 | G01M109201C10 SS+6d | 85% | 23.4d | 2011-08-04 | 2012-02-12 | 83.8d | 0d | MECHANICAL [10837.2 h]; Cost [2493216 AED] | 2,493,215.64 | 2,119,233.29 | I05ME23013C0 | GA | C | 01 | M1 | ME | 230 | 13 | PP | BILL 6 | B06 | S1 | 2F | R00 | ACF04 | 230 |  |  |  | 75 | 5 | CP | MEP |  | 0 | 0 | 0 | 0 |  | 5 | 2n | H |  |
| G01M123019C10 |  | GA-01 ; 1st Fix, Inst of CHW pipe (Mech RM) | 66d | 2011-07-10 A | 2012-03-21 | G01M121111C10 SS+12d, G01M123001C10 | 20% | 52.8d | 2011-10-02 | 2011-12-22 | 124.15d | 0d | MECHANICAL [1650 h]; Cost [90112.2 AED] | 90,112.24 | 18,022.45 | I05ME23019C0 | GA | C | 01 | M1 | ME | 230 | 19 | PP | BILL 6 | B06 | S1 | 1F | R00 | ACF04 | 230 |  |  |  |  |  | CP | MEP | M1F |  |  |  |  |  | 75 | 1S |  |  |
| G01M109601C10 |  | GA-01 ; Floor Finishes (Mech RM) | 24d | 2011-08-03 A | 2012-05-03 | G01M107101C0, G01M109205C10 | 50% | 12d | 2012-01-10 | 2012-02-07 | 177.33d | 0d | ASSORTED FLOOR FINISH [3168 h]; ASSORTED FLOOR FINISH [1759 m2]; Cost |  |  | I05ME09601C0 | GA | C | 01 | M1 | FF | 096 | 01 | PP | BILL 6 | B06 | S1 | 01 | R00 | ACF06 | FF | 326 | 1501 |  | 50 | 0 | CP |  |  | 0 | 0 | 0 | 0 |  |  |  |  | 50 |
| G01M121119C10 |  | GA-01 ; 1st Fix, Inst of Sprinkler branch pipe (Mech RM) | 54d | 2011-09-05 A | 2012-05-14 | G01M121111C10 | 10% | 48.6d | 2012-02-19 | 2012-04-22 | 134.2d | 0d | MECHANICAL [931.2 h]; Cost [50874.3 AED] | 50,874.31 | 5,087.43 | I05ME21119C0 | GA | C | 01 | M1 | ME | 211 | 19 | PP | BILL 6 | B06 | S1 | 1F | R00 | ACF04 | 211 |  |  |  |  |  |  | MEP | M1F |  |  |  |  |  |  | 1S |  |  |
| G01M126001C10 |  | GA-01 ; 1st Fix, Inst of Trunking/Conduiting (Mech RM) | 54d | 2011-12-06 | 2012-02-09 | G01M123001C10 |  |  |  |  | 124.15d | 0d | ELECTRICAL [451.2 h]; Cost |  |  | I05ME26001C0 | GA | C | 01 | M1 | ME | 260 | 01 | PP | BILL 6 | B06 | S1 | 1F | R00 | ACF04 | 260 |  |  | 25090.1 |  |  |  | MEP | M1F |  |  |  |  |  | 85 | 1S |  |  |
| G01M122011C10 |  | GA-01 ; 1st Fix, Inst of Drainage pipe (Mech RM) | 54d | 2011-12-22 | 2012-02-26 | G01M123001C10, G01M126001C10 SS+14d |  |  |  |  | 124.15d | 0d | PLUMBING [644.4 h]; Cost |  |  | I05ME22011C0 | GA | C | 01 | M1 | ME | 220 | 11 | PP | BILL 6 | B06 | S1 | 1F | R00 | ACF04 | 220 |  |  | 4083.51 |  |  |  | MEP | M1F |  |  |  |  |  | 50 | 1S |  |  |
| G01M123005C10 |  | GA-01 ; 1st Fix, Inst of Ducting (Mech RM) | 54d | 2012-01-04 | 2012-03-08 | G01M123001C10, G01M123013C10 |  |  |  |  | 83.8d | 0d | MECHANICAL [7458 h]; Cost |  |  | I05ME23005C0 | GA | C | 01 | M1 | ME | 230 | 05 | PP | BILL 6 | B06 | S1 | 1F | R00 | ACF04 | 230 |  |  |  |  |  |  | MEP | M1F |  |  |  |  |  |  | 1S |  |  |
| G01M123011C10 |  | GA-01 ; 2nd Fix, Inst of Equipment (FCU,FAN,PUMP) (Mech RM) | 60d | 2012-01-04 | 2012-03-15 | G01M123013C10 |  |  |  |  | 185.8d | 0d | MECHANICAL [601.2 h]; Cost |  |  | I05ME23011C0 | GA | C | 01 | M1 | ME | 230 | 11 | PP | BILL 6 | B06 | S1 | 2F | R00 | ACF04 | 230 |  |  |  |  |  |  | MEP |  |  |  |  |  |  |  | 2n | H |  |
| G01M126009C10 |  | GA-01 ; 2nd Fix, Inst of Equipment (DB, TR, SG) (Mech RM) | 60d | 2012-01-04 | 2012-03-15 | G01M123013C10 |  |  |  |  | 185.8d | 102d | ELECTRICAL [946.8 h]; Cost |  |  | I05ME26009C0 | GA | C | 01 | M1 | ME | 260 | 09 | PP | BILL 6 | B06 | S1 | 2F | R00 | ACF04 | 260 |  |  |  |  |  |  | MEP |  |  |  |  |  |  |  | 2n | E |  |
| G01M126011C10 |  | GA-01 ; 1st Fix, Inst of Cable Tray (Mech RM) | 54d | 2012-01-04 | 2012-03-08 | G01M123013C10 |  |  |  |  | 137.8d | 0d | ELECTRICAL [244.8 h]; Cost |  |  | I05ME26011C0 | GA | C | 01 | M1 | ME | 260 | 11 | PP | BILL 6 | B06 | S1 | 1F | R00 | ACF04 | 260 |  |  |  |  |  |  | MEP | M1F |  |  |  |  |  |  | 1S |  |  |
| G01M127020C10 |  | GA-01 ; 2nd Fix, Inst of ELV Equipment (Panels) (Mech RM) | 60d | 2012-01-04 | 2012-03-15 | G01M123013C10 |  |  |  |  | 185.8d | 102d | ELECTRICAL [1618.8 h]; Cost |  |  | I05ME27020C0 | GA | C | 01 | M1 | ME | 270 | 20 | PP | BILL 6 | B06 | S1 | 2F | R00 | ACF04 | 270 |  |  |  |  |  |  | MEP |  |  |  |  |  |  |  | 2n | E |  |
| G01M122006C10 |  | GA-01 ; 1st Fix, Inst of Water supply pipe (Mech RM) | 54d | 2012-01-04 | 2012-03-08 | G01M122011C10 SS+10d, G01M123001C10 |  |  |  |  | 124.15d | 0d | PLUMBING [500.4 h]; Cost |  |  | I05ME22006C0 | GA | C | 01 | M1 | ME | 220 | 06 | PP | BILL 6 | B06 | S1 | 1F | R00 | ACF04 | 220 |  |  |  |  |  |  | MEP | M1F |  |  |  |  |  | 45 | 1S |  |  |
| G01M107101C0 |  | GA-01 ; Waterproofing (Mech RM) | 15d | 2012-02-26 | 2012-03-14 | G01M122011C10, G01M123013C10 |  |  |  |  | 208.33d | 31d | THERMAL & MOISTURE [64 h]; THERMAL & MOISTURE [411 m2]; Cost |  |  | I05ME09901C0 | GA | C | 01 | M1 | FF | 071 | 01 | PP | BILL 6 | B06 | S1 | 01 | R00 | ACF03 | 071 | 328 | 1469 |  |  |  |  |  |  |  |  |  |  |  |  |  |  |  |
| G01M123015C10 |  | GA-01 ; 2nd Fix, Inst of VCD's/FD's (Mech RM) | 48d | 2012-03-08 | 2012-05-03 | G01M123005C10 |  |  |  |  | 143.8d | 17.4d | MECHANICAL [673.2 h]; Cost |  |  | I05ME23015C0 | GA | C | 01 | M1 | ME | 230 | 15 | PP | BILL 6 | B06 | S1 | 2F | R00 | ACF07 | 230 |  |  |  |  |  |  | MEP |  |  |  |  |  |  |  | 2n |  |  |
| G01M126007C10 |  | GA-01 ; 2nd Fix, Cable Pulling (Mech RM) | 48d | 2012-03-08 | 2012-05-03 | G01M126011C10 |  |  |  |  | 143.8d | 60d | ELECTRICAL [1117.2 h]; Cost |  |  | I05ME26007C0 | GA | C | 01 | M1 | ME | 260 | 07 | PP | BILL 6 | B06 | S1 | 2F | R00 | ACF07 | 260 |  |  |  |  |  |  | MEP |  |  |  |  |  |  |  | 2n |  |  |
| G01M127010C10 |  | GA-01 ; 1st Fix, Inst of Trunking for ELV system (Mech RM) | 54d | 2012-03-08 | 2012-05-10 | G01M123005C10 |  |  |  |  | 83.8d | 0d | ELECTRICAL [597.6 h]; Cost |  |  | I05ME27010C0 | GA | C | 01 | M1 | ME | 270 | 10 | PP | BILL 6 | B06 | S1 | 1F | R00 | ACF04 | 270 |  |  |  |  |  |  | MEP | M1F |  |  |  |  |  |  | 1S |  |  |
| G01M109205C10 |  | GA-01 ; Partitions Closing (Mech RM) | 36d | 2012-03-08 | 2012-04-19 | G01M109201C10, G01M109203C10, G01M122006C10, G01M122006C10 FF, G01M122011C10, GAFOA09208C1 FF, G01M108101C10 FF |  |  |  |  | 155.2d | 0d | PARTITIONS [174 m]; PARTITIONS [1682 h]; Cost |  |  | I05ME09205C0 | GA | C | 01 | M1 | PT | 092 | 05 | PP | BILL 6 | B06 | S1 | FF | R00 | ACF06 | 092 | 315 | 1464 |  |  |  |  | GP | P2F |  |  |  |  |  |  |  |  |  |
| G01M123009C10 |  | GA-01 ; 2nd Fix, Inst of VAV'S CHW connection (Mech RM) | 48d | 2012-03-15 | 2012-05-10 | G01M123011C10 |  |  |  |  | 185.8d | 102d | MECHANICAL [788.4 h]; Cost |  |  | I05ME23009C0 | GA | C | 01 | M1 | ME | 230 | 09 | PP | BILL 6 | B06 | S1 | 2F | R00 | ACF07 | 230 |  |  |  |  |  |  | MEP |  |  |  |  |  |  |  | 2n |  |  |
| G01M121117C10 |  | GA-01 ; 2nd Fix, Inst of Zone Control Valve (Mech RM) | 48d | 2012-03-21 | 2012-05-16 | G01M123013C10, G01M123019C10 |  |  |  |  | 132.4d | 48.6d | MECHANICAL [1000.8 h]; Cost |  |  | I05ME21117C0 | GA | C | 01 | M1 | ME | 211 | 17 | PP | BILL 6 | B06 | S1 | 2F | R00 | ACF07 | 211 |  |  |  |  |  |  | MEP |  |  |  |  |  |  |  | 2n |  |  |
| G01M123017C10 |  | GA-01 ; 2nd Fix, Insulation of CHW pipe & Duct (Mech RM) | 54d | 2012-03-21 | 2012-05-23 | G01M123005C10, G01M123019C10 |  |  |  |  | 126.4d | 0d | MECHANICAL [1699.2 h]; Cost |  |  | I05ME23017C0 | GA | C | 01 | M1 | ME | 230 | 17 | PP | BILL 6 | B06 | S1 | 2F | R00 | ACF07 | 230 |  |  |  |  |  |  | MEP |  |  |  |  |  |  |  | 2n |  |  |
| G01M109901C10 |  | GA-01 ; Wall Prime & 1st coat (Mech RM) | 24d | 2012-04-19 | 2012-05-17 | G01M109205C10 |  |  |  |  | 161.2d | 0d | WALL PAINT [111 h]; WALL PAINT [138 m2]; Cost |  |  | I05ME09901C0 | GA | C | 01 | M1 | PA | 099 | 01 | PP | BILL 6 | B06 | S1 | 01 | R00 | ACF06 | 099 | 328 | 1469 |  |  |  |  |  |  |  |  |  |  |  |  |  |  |  |
| G01M121123C10 |  | GA-01 ; Final Fix, Inst of Fire Extinguishers/FHC (Mech RM) | 18d | 2012-04-19 | 2012-05-10 | G01M109205C10 |  |  |  |  | 215.2d | 131.4d | MECHANICAL [1230 h]; Cost |  |  | I05ME21123C0 | GA | C | 01 | M1 | ME | 211 | 23 | PP | BILL 6 | B06 | S1 | FF | R00 | ACF07 | 211 |  |  |  |  |  |  | MEP |  |  |  |  |  |  |  | FF |  |  |
| G01M126015C10 |  | GA-01 ; Final Fix, Inst of Ceiling rose (Mech RM) | 30d | 2012-04-19 | 2012-05-24 | G01M109205C10 |  |  |  |  | 203.2d | 119.4d | ELECTRICAL [34.8 h]; Cost |  |  | I05ME26015C0 | GA | C | 01 | M1 | ME | 260 | 15 | PP | BILL 6 | B06 | S1 | FF | R00 | ACF07 | 260 |  |  |  |  |  |  | MEP |  |  |  |  |  |  |  | FF |  |  |
| G01M122003C10 |  | GA-01 ; Final Fix, Inst of All drain (Mech RM) | 18d | 2012-05-03 | 2012-05-24 | G01M109601C10 |  |  |  |  | 203.2d | 119.4d | PLUMBING [644.4 h]; Cost |  |  | I05ME22003C0 | GA | C | 01 | M1 | ME | 220 | 03 | PP | BILL 6 | B06 | S1 | FF | R00 | ACF07 | 220 |  |  |  |  |  |  | MEP |  |  |  |  |  |  |  | FF |  |  |
| G01M127001C10 |  | GA-01 ; 1st Fix, Wiring/ Cabling work (Mech RM) | 54d | 2012-05-10 | 2012-07-14 | G01M126001C10, G01M126011C10, G01M127010C10 |  |  |  |  | 83.8d | 0d | ELECTRICAL [242.4 h]; Cost |  |  | I05ME27001C0 | GA | C | 01 | M1 | ME | 270 | 01 | PP | BILL 6 | B06 | S1 | 1F | R00 | ACF04 | 270 |  |  |  |  |  |  | MEP | M1F |  |  |  |  |  |  | 1S |  |  |
| G01M121115C10 |  | GA-01 ; 2nd Fix, Inst of Sprinkler droppers (Mech RM) | 48d | 2012-05-14 | 2012-07-10 | G01M109205C10, G01M121119C10 |  |  |  |  | 134.2d | 0d | MECHANICAL [1734 h]; Cost |  |  | I05ME21115C0 | GA | C | 01 | M1 | ME | 211 | 15 | PP | BILL 6 | B06 | S1 | 2F | R00 | ACF07 | 211 |  |  |  |  |  |  | MEP |  |  |  |  |  |  |  | 2n |  |  |
| G01M108105C10 |  | GA-01 ; Metal Doors (Mech RM) | 36d | 2012-05-17 | 2012-06-30 | G01M108101C10, G01M109901C10, G01M109601C10 |  |  |  |  | 165.33d | 0d | METAL DOORS [270 h]; METAL DOORS [27 no]; Cost |  |  | I05ME08105C0 | GA | C | 01 | M1 | DO | 081 | 05 | PP | BILL 6 | B06 | S1 | DR | R00 | ACF06 | 081 | 317 | 1466 |  |  |  |  |  |  |  |  |  |  | 08 |  |  |  |  |
| G01M109903C10 |  | GA-01 ; Wall - Final Paint (Mech RM) | 24d | 2012-05-17 | 2012-06-14 | G01M109901C10 |  |  |  |  | 173.2d | 0d | WALL PAINT [60 h]; WALL PAINT [74 m2]; Cost |  |  | I05ME09903C0 | GA | C | 01 | M1 | PA | 099 | 03 | PP | BILL 6 | B06 | S1 | 02 | R00 | ACF06 | 099 | 329 | 1470 |  |  |  |  |  |  |  |  |  |  |  |  |  |  |  |
| G01M126019C10 |  | GA-01 ; Final Fix, Inst of Light fittings (Mech RM) | 48d | 2012-05-17 | 2012-07-14 | G01M109901C10 |  |  |  |  | 161.2d | 77.4d | ELECTRICAL [7791.6 h]; Cost |  |  | I05ME26019C0 | GA | C | 01 | M1 | ME | 260 | 19 | PP | BILL 6 | B06 | S1 | FF | R00 | ACF07 | 260 |  |  |  |  |  |  | MEP |  |  |  |  |  |  |  | FF |  |  |
| G01M123023C10 |  | GA-01 ; Final Fix, Inst of Flexible Duct & Plenum boxes (Mech RM) | 42d | 2012-05-23 | 2012-07-12 | G01M123015C10, G01M123017C10 |  |  |  |  | 126.4d | 0d | MECHANICAL [1962 h]; Cost |  |  | I05ME23023C0 | GA | C | 01 | M1 | ME | 230 | 23 | PP | BILL 6 | B06 | S1 | FF | R00 | ACF07 | 230 |  |  |  |  |  |  | MEP |  |  |  |  |  |  |  | FF |  |  |
| G01M126017C10 |  | GA-01 ; Final Fix, Inst of Switch/Sockets (Mech RM) | 12d | 2012-06-14 | 2012-06-30 | G01M109903C10 |  |  |  |  | 173.2d | 89.4d | ELECTRICAL [132 h]; Cost |  |  | I05ME26017C0 | GA | C | 01 | M1 | ME | 260 | 17 | PP | BILL 6 | B06 | S1 | FF | R00 | ACF07 | 260 |  |  |  |  |  |  | MEP |  |  |  |  |  |  |  | FF |  |  |
| G01M108709C10 |  | GA-01 ; Ironmongery (Mech RM) | 19.88d | 2012-06-30 | 2012-07-23 | G01M108105C10 |  |  |  |  | 165.33d | 115.65d | IRONMONGERY [110 h]; IRONMONGERY [11 no]; Cost |  |  | I05ME08709C0 | GA | C | 01 | M1 | DO | 087 | 09 | PP | BILL 6 | B06 | S1 | IM | R00 | ACF06 | 087 | 322 | 1467 |  |  |  |  |  |  |  |  |  |  | 08 |  |  |  |  |
| G01M121121C10 |  | GA-01 ; Final Fix, Inst of Sprinklers head (Mech RM) | 30d | 2012-07-10 | 2012-08-14 | G01M121115C10 |  |  |  |  | 134.2d | 50.4d | MECHANICAL [297.6 h]; Cost |  |  | I05ME21121C0 | GA | C | 01 | M1 | ME | 211 | 21 | PP | BILL 6 | B06 | S1 | FF | R00 | ACF07 | 211 |  |  |  |  |  |  | MEP |  |  |  |  |  |  |  | FF |  |  |
| G01M123021C10 |  | GA-01 ; Final Fix, Inst of Grilles & Diffusers (Mech RM) | 36d | 2012-07-12 | 2012-08-26 | G01M123023C10 |  |  |  |  | 126.4d | 42.6d | MECHANICAL [1030.8 h]; Cost |  |  | I05ME23021C0 | GA | C | 01 | M1 | ME | 230 | 21 | PP | BILL 6 | B06 | S1 | FF | R00 | ACF07 | 230 |  |  |  |  |  |  | MEP |  |  |  |  |  |  |  | FF |  |  |
| G01M126005C10 |  | GA-01 ; 2nd Fix, Wiring for Power/Lighting/Emergency (Mech RM) | 48d | 2012-07-14 | 2012-09-10 | G01M126001C10, G01M126007C10, G01M126011C10, G01M127001C10, G01M127010C10 |  |  |  |  | 83.8d | 0d | ELECTRICAL [242.4 h]; Cost |  |  | I05ME26005C0 | GA | C | 01 | M1 | ME | 260 | 05 | PP | BILL 6 | B06 | S1 | 2F | R00 | ACF07 | 260 |  |  |  |  |  |  | MEP |  |  |  |  |  |  |  | 2n |  |  |
| G01M127003C10 |  | GA-01 ; Final Fix, BMS connection work to Equipment (Mech RM) | 48d | 2012-07-14 | 2012-09-10 | G01M121117C10, G01M123011C10, G01M123013C10, G01M123015C10, G01M126009C10, G01M127001C10, G01M127020C10 |  |  |  |  | 83.8d | 0d | ELECTRICAL [10323.6 h]; Cost |  |  | I05ME27003C0 | GA | C | 01 | M1 | ME | 270 | 03 | PP | BILL 6 | B06 | S1 | FF | R00 | ACF07 | 270 |  |  |  |  |  |  | MEP |  |  |  |  |  |  |  | FF |  |  |
| G01M126013C10 |  | GA-01 ; Final Fix, Termination & Gladding of Cables (Mech RM) | 30d | 2012-09-10 | 2012-10-15 | G01M109205C10, G01M126005C10 |  |  |  |  | 83.8d | 0d | ELECTRICAL [62.4 h]; Cost |  |  | I05ME26013C0 | GA | C | 01 | M1 | ME | 260 | 13 | PP | BILL 6 | B06 | S1 | FF | R00 | ACF07 | 260 |  |  |  |  |  |  | MEP |  |  |  |  |  |  |  | FF |  |  |
| G01M127030C10 |  | GA-01 ; Final Fix, Inst of ELV device (Detector/Speaker) (Mech RM) | 30d | 2012-09-10 | 2012-10-15 | G01M109901C10, G01M123009C10, G01M127020C10, G01M127003C10 |  |  |  |  | 83.8d | 0d | ELECTRICAL [710.4 h]; Cost |  |  | I05ME27030C0 | GA | C | 01 | M1 | ME | 270 | 30 | PP | BILL 6 | B06 | S1 | FF | R00 | ACF07 | 270 |  |  |  |  |  |  | MEP |  |  |  |  |  |  |  | FF |  |  |

| ID | WBS | Activity | Type | Duration | Start | Finish | Predecessors | Complete | Remaining | Planned start | Planned finish | Total float | Free float | Resources | change id | CCAD BUILDING(SET) | CCAD PHASE(SET) | CCAD FLOOR(SET) | CCAD ZONE(SET) | CCAD WORK(SET) | CCAD SECTION(SET) | CCAD SERIAL No.(SET) | CCAD RESPONSIBILITY(SET) | CCAD CBS(SET) | CCAD BILL(SET) | CCAD HANDOVER(SET) | CCAD TAG(SET) | CCAD REV(SET) | CCADACF (SET) | CCAD SSCF | Actual Cost | RENZ % COMPLETE | Phase | Area/ Department | Grids | Are | Weight & Nos | Process | Levels | CCAD CSA | user_number8 | user_integer1 | user_integer2 | user_number7 | Claimed This Month | P_811 | P_711 | CCAD (VO) | Change Order # | NEW ACTIVITY ID |
| --- | --- | --- | --- | --- | --- | --- | --- | --- | --- | --- | --- | --- | --- | --- | --- | --- | --- | --- | --- | --- | --- | --- | --- | --- | --- | --- | --- | --- | --- | --- | --- | --- | --- | --- | --- | --- | --- | --- | --- | --- | --- | --- | --- | --- | --- | --- | --- | --- | --- | --- |
|  | 10 | **Precommissioning Tesing & snagging (Mech Room)** |  |  | 2012-10-15 | 2013-01-09 |  |  |  |  |  |  |  |  |  |  |  |  |  |  |  |  |  |  |  |  |  |  |  |  |  |  |  |  |  |  |  |  |  |  |  |  |  |  |  |  |  |  |  |  |
| G01TS01804C0 |  | GA-01 ; MEP de-snag, FIREM sign-off |  | 12d | 2012-10-15 | 2012-10-31 | G01M121123C10, G01M126015C10, G01M126017C10, G01M126019C10, G01M122003C10, G01M127030C10, G01M123023C10, G01M121121C10, G01M123021C10, G01M127003C10, G01M126013C10 |  |  |  |  | 83.8d | 34.12d | TESTING & COMMISSIONING [510 h]; Cost | G01TS01801C0 | GA | C | 01 | TS | SC | 018 | 01 | PP | BILL 6 | B06 | S1 | 01 | R00 | ACF07 | 018 |  |  |  |  |  |  |  |  |  |  |  |  |  |  |  |  |  |  |  |  |
| G01TS01802C10 |  | GA-01 ; Touch-up & Clean / JV inspection /CIR /De-snag |  | 18d | 2012-12-12 | 2013-01-03 | G01M108709C10, G01M109601C10, G01M109903C10, G01TS01804C0, G01TS01802C0 |  |  |  |  | 49.68d | 5.12d | TESTING & COMMISSIONING [128 h]; Cost | G01TS01802C0 | GA | C | 01 | TS | SC | 018 | 02 | PP | BILL 6 | B06 | S1 | 02 | R00 | ACF07 | 018 |  |  |  |  |  |  |  |  |  |  |  |  |  |  |  |  |  |  |  |  |
| G01TS01806C0 |  | GA-01 ; Consultant's final de-snag inspection |  | 0d | 2013-01-09 | 2013-01-09 | G01TS01802C10, G01TS01805C0 |  |  |  |  | 44.55d | 16.55d | Cost | G01TS01803C0 | GA | C | 01 | TS | SC | 018 | 03 | PP | BILL 6 | B06 | S1 | 03 | R00 | ACF07 | 018 |  |  |  |  |  |  |  |  |  |  |  |  |  |  |  |  |  |  |  |  |
|  | 02 | **Level 2** |  |  | 2011-01-23 | 2013-01-09 |  |  |  |  |  |  |  |  |  |  |  |  |  |  |  |  |  |  |  |  |  |  |  |  |  |  |  |  |  |  |  |  |  |  |  |  |  |  |  |  |  |  |  |  |
|  | 01 | **Structure & Envelopment** |  |  | 2011-01-23 | 2012-08-28 |  |  |  |  |  |  |  |  |  |  |  |  |  |  |  |  |  |  |  |  |  |  |  |  |  |  |  |  |  |  |  |  |  |  |  |  |  |  |  |  |  |  |  |  |
| G02S105101C0 |  | GA-02 ; Erection of Structural Steel of 2nd FLR (Zone S1) |  | 11.1d | 2011-01-23 A | 2011-02-03 A | G01S105103C0 | 100% |  | 2011-01-23 | 2011-02-05 |  |  | STRUCTURAL STEEL [6896 h]; STRUCTURAL STEEL [227 T(Fe)]; Cost | G02S105101C0 | GA | C | 02 | S1 | ST | 051 | 01 |  | BILL 6 | B06 | S1 | 01 | R00 | ACF03 | 051 | 470733.94 | 100 | Z2 | GA | P12 | R | A6 | EREC | POD2 | ST |  |  |  |  |  |  |  |  |  |  |
| G02S105103C0 |  | GA-02 ; Alignment & Welding of 2nd FLR (Zone S1) |  | 5d | 2011-01-26 A | 2011-04-19 A | G02S105101C0 | 100% |  | 2011-02-06 | 2011-02-12 |  |  | STRUCTURAL STEEL [251 h]; Cost | G02S105103C0 | GA | C | 02 | S1 | ST | 051 | 03 |  | BILL 6 | B06 | S1 | 02 | R00 | ACF03 | 051 | 52303.77 | 100 | Z2 | GA | P12 | R | A6 | EREC | POD2 | ST |  |  |  |  |  |  |  |  |  |  |
| G02S205101C0 |  | GA-02 ; Erection of Structural Steel of 2nd FLR (Zone S2) |  | 11.12d | 2011-02-22 A | 2011-03-23 A | G01S205103C0 | 100% |  | 2011-02-27 | 2011-03-12 |  |  | STRUCTURAL STEEL [11868 h]; STRUCTURAL STEEL [392 T(Fe)]; Cost | G02S205101C0 | GA | C | 02 | S2 | ST | 051 | 01 |  | BILL 6 | B06 | S1 | 01 | R00 | ACF03 | 051 |  | 100 | Z2 | GA | P12 | R | A6 | EREC | POD2 | ST |  |  |  |  |  |  |  |  |  |  |
| G02S205103C0 |  | GA-02 ; Alignment & Welding of 2nd FLR (Zone S2) |  | 5d | 2011-02-26 A | 2011-04-20 A | G02S205101C0 | 100% |  | 2011-03-12 | 2011-03-17 |  |  | STRUCTURAL STEEL [188 h]; Cost | G02S205103C0 | GA | C | 02 | S2 | ST | 051 | 03 |  | BILL 6 | B06 | S1 | 02 | R00 | ACF03 | 051 |  | 100 | Z2 | GA | P12 | R | A6 | EREC | POD2 | ST |  |  |  |  |  |  |  |  |  |  |
| G02S105305C0 |  | GA-02 ; Metal Decking 2nd FLR (Zone S1) |  | 10d | 2011-04-13 A | 2011-04-24 A | G02S105103C0, G03S105101C0 | 100% |  | 2011-03-19 | 2011-03-30 |  |  | STRUCTURAL STEEL [121 h]; Cost | G02S105305C0 | GA | C | 02 | S1 | ST | 053 | 05 |  | BILL 6 | B06 | S1 | 03 | R00 | ACF03 | 053 |  | 100 | Z2 | GA | P12 | R | A6 | MDEC | POD2 | ST |  |  |  |  |  |  |  |  |  |  |
| G02S205305C0 |  | GA-02 ; Metal Decking 2nd FLR (Zone S2) |  | 10d | 2011-04-16 A | 2011-04-27 A | G02S205103C0, G03S205101C0 | 100% |  | 2011-03-31 | 2011-04-12 |  |  | STRUCTURAL STEEL [90 h]; Cost | G02S205305C0 | GA | C | 02 | S2 | ST | 053 | 05 |  | BILL 6 | B06 | S1 | 03 | R00 | ACF03 | 053 |  | 100 | Z2 | GA | P12 | R | A6 | MDEC | POD2 | ST |  |  |  |  |  |  |  |  |  |  |
| G02S103399C0 |  | GA-02 ; Concrete on Metal Decking 2nd FLR (Zone S1) |  | 10d | 2011-04-19 A | 2011-05-05 A | G02S105305C0 | 100% |  | 2011-03-30 | 2011-04-11 |  |  | CONCRETE [13360 h]; CONCRETE [336 m3]; Cost | G02S103399C0 | GA | C | 02 | S1 | CT | 033 | 99 |  | BILL 6 | B06 | S1 | 08 | R00 | ACF03 | 033 |  | 100 | Z2 | GA | P12 | R | A6 | MDEC | POD2 |  |  |  |  |  |  |  |  |  |  |  |
| G02CO04408C0 |  | GA-02 ; C3 Bracket (Common Zone) |  | 120d | 2011-04-20 A | 2011-12-26 | G02S107807C0, G02S207807C0 | 42% | 69.6d | 2011-10-15 | 2012-03-11 | 18.65d | 0d | FACADE CURTAIN WALL 3 [1307.8 h]; Cost | G02CO04408C0 | GA | C | 02 | CO | FA | 044 | 08 | PP | BILL 6 | B06 | S1 | FC3 | R00 | ACF05 | 044 |  | 20 |  |  |  |  |  |  |  | FA | 0 | 0 | 0 | 0 | 54235.3 | 42 | 35 | CP |  |  |
| G02S203399C0 |  | GA-02 ; Concrete on Metal Decking 2nd FLR (Zone S2) |  | 10d | 2011-04-25 A | 2011-05-05 A | G02S205305C0 | 100% |  | 2011-04-12 | 2011-04-24 |  |  | CONCRETE [9816 h]; CONCRETE [247 m3]; Cost | G02S203399C0 | GA | C | 02 | S2 | CT | 033 | 99 |  | BILL 6 | B06 | S1 | 08 | R00 | ACF03 | 033 |  | 100 | Z2 | GA | P12 | R | A6 | MDEC | POD2 |  |  |  |  |  |  |  |  |  |  |  |
| G02S107807C0 |  | GA-02 ; Cementitious Fire Proofing 2nd FLR (Zone S1) |  | 10d | 2011-05-15 A | 2011-05-30 A | G03S103399C0 | 100% |  | 2011-06-09 | 2011-06-20 |  |  | CEMENTITIOUS FIREPROOFING [904 h]; CEMENTITIOUS FIREPROOFING [1807 m2]; Cost | G02S107807C0 | GA | C | 02 | S1 | ST | 078 | 07 |  | BILL 6 | B06 | S1 | 04 | R00 | ACF03 | 078 |  | 100 | Z2 | GA | P12 | R | A6 | FIRE | POD2 | ST |  |  |  |  |  |  |  |  |  |  |
| G02S207807C0 |  | GA-02 ; Cementitious Fire Proofing 2nd FLR (Zone S2) |  | 10d | 2011-05-15 A | 2011-05-30 A | G03S203399C0 | 100% |  | 2011-06-09 | 2011-06-20 |  |  | CEMENTITIOUS FIREPROOFING [676 h]; CEMENTITIOUS FIREPROOFING [1352 m2]; Cost | G02S207807C0 | GA | C | 02 | S2 | ST | 078 | 07 |  | BILL 6 | B06 | S1 | 04 | R00 | ACF03 | 078 |  | 100 | Z2 | GA | P12 | R | A6 | FIRE | POD2 | ST |  |  |  |  |  |  |  |  |  |  |
| G02GN02206C0 |  | GA-02 ; Temporary Enclosure | level of effort | 25.32d | 2011-08-03 A | 2012-05-30 | G02M109203C0 SS |  | 201.6d | 2012-01-12 | 2012-02-12 | 18.65d | 0d | Labor General [0.6 h]; Cost |  | GA | C | 02 | GEN | FA | GEN |  | PP |  | B06 |  | TE | R00 | ACF05 | 010 |  |  |  |  |  |  |  |  |  | FA |  |  |  |  |  |  |  |  |  |  |
| G02CO04417C0 |  | GA-02 ; EC Steel Structure for Canopy (Common Zone) |  | 60d | 2011-11-15 | 2012-01-26 | PGLS403391C0 FS+87d |  |  |  |  | 250d | 0d | Labor General [2524.4 h]; Cost | C04CO04401C0 | GA | C | 02 | CO | FA | 044 | 01 | PP | BILL 6 | B06 | S1 | EC | R00 | ACF05 | 044 |  |  |  |  |  |  |  |  |  | FA |  |  |  |  |  |  |  |  | 940 | 193 |
| G02CO04431C0 |  | GA-02 ; C3 Transom & Mullion (Common Zone) |  | 102d | 2011-12-26 | 2012-04-25 | G02CO04408C0 |  |  |  |  | 18.65d | 0d | FACADE CURTAIN WALL 3 [5231.1 h]; Cost | G02CO04431C0 | GA | C | 02 | CO | FA | 044 | 31 | PP | BILL 6 | B06 | S1 | FC3 | R00 | ACF05 | 044 |  |  |  |  |  |  |  |  |  | FA |  |  |  |  |  |  |  |  |  |  |
| G02CO04423C0 |  | GA-02 ; SK-2 Monoslope skylight Bracket &transom installation (Common Zone) |  | 72d | 2012-01-04 | 2012-03-28 | G02S107807C0, G02S207807C0, C04CO04409C0 |  |  |  |  | 62.13d | 0d | FACADE SKYLIGHT GLASS [12504.2 h]; Cost | DR5CO04423C0 | GA | C | 02 | CO | FA | 044 | 23 | PP | BILL 6 | B06 | S2 | FSY | R00 | ACF05 | 044 |  |  |  |  |  |  |  |  |  | FA |  |  |  |  |  |  |  |  |  |  |
| G02CO04407C0 |  | GA-02 ; EC Gallery Entrance Canopy (Common Zone) |  | 66d | 2012-01-28 | 2012-04-14 | G02S107807C0, G02S207807C0, G02CO04417C0 |  |  |  |  | 250d | 113.6d | Labor General [5889.7 h]; Cost | C04CO04401C0 | GA | C | 02 | CO | FA | 044 | 01 | PP | BILL 6 | B06 | S1 | EC | R00 | ACF05 | 044 |  |  |  |  |  |  |  |  |  | FA |  |  |  |  |  |  |  |  | 940 | 193 |
| G02CO04404C0 |  | GA-02 ; C3 Glazing (Common Zone) |  | 102d | 2012-01-31 | 2012-05-30 | G02CO04431C0 SS+30d, G02CO04431C0 FF, G02GN02206C0 FF, GAFWA00110M0 |  |  |  |  | 18.65d | 0d | FACADE CURTAIN WALL 3 [2179.8 h]; Cost | G02CO04404C0 | GA | C | 02 | CO | FA | 044 | 04 | PP | BILL 6 | B06 | S1 | FC3 | R00 | ACF05 | 044 |  |  |  |  |  |  |  |  |  | FA |  |  |  |  |  |  |  |  |  |  |
| G02CO04405C0 |  | GA-02 ; SK-2 Monoslope skylight Glass installation (Common Zone) |  | 60d | 2012-03-29 | 2012-06-06 | G02CO04423C0 |  |  |  |  | 62.13d | 12.32d | FACADE SKYLIGHT GLASS [3126.5 h]; Cost | DR5CO04405C0 | GA | C | 02 | CO | FA | 044 | 05 | PP | BILL 6 | B06 | S2 | FSY | R00 | ACF05 | 044 |  |  |  |  |  |  |  |  |  | FA |  |  |  |  |  |  |  |  |  |  |
| G03CO04408C0 |  | GA-02 ; M1 Bracket (Coping to C3) |  | 66d | 2012-05-15 | 2012-08-01 | G03S107807C0, G03S207807C0, G02CO04404C0 FS-13d |  |  |  |  | 18.65d | 0d | FACADE METAL PANEL 1 [4722.8 h]; Cost | G03CO04408C0 | GA | C | 03 | CO | FA | 044 | 08 | PP | BILL 6 | B06 | S1 | FM1 | R00 | ACF05 | 044 |  |  |  |  |  |  |  |  |  | FA |  |  |  |  |  |  |  |  |  |  |
| G03CO04404C0 |  | GA-02 ; M1 Metal Panel (Coping to C3) |  | 72d | 2012-06-02 | 2012-08-28 | G02CO04404C0 SS+15d, G03CO04431C0 SS, G03CO04431C0 FF |  |  |  |  | 136.4d | 0d | FACADE METAL PANEL 1 [12593.3 h]; Cost | G03CO04404C0 | GA | C | 03 | CO | FA | 044 | 04 | PP | BILL 6 | B06 | S1 | FM1 | R00 | ACF05 | 044 |  |  |  |  |  |  |  |  |  | FA |  |  |  |  |  |  |  |  |  |  |
| G03CO04431C0 |  | GA-02 ; M1 External Partition (Coping to C3) |  | 72d | 2012-06-02 | 2012-08-28 | G02CO04431C0 SS+10d, G03CO04408C0 SS+15d, G03S103399C0, G03S203399C0, G03CO04408C0 FF |  |  |  |  | 136.4d | 0d | FACADE METAL PANEL 1 [14167.4 h]; Cost | G03CO04431C0 | GA | C | 03 | CO | FA | 044 | 31 | PP | BILL 6 | B06 | S1 | FM1 | R00 | ACF05 | 044 |  |  |  |  |  |  |  |  |  | FA |  |  |  |  |  |  |  |  |  |  |

| ID | WBS | Activity | Duration | Start | Finish | Predecessors | Complete | Remaining | Planned start | Planned finish | Total float | Free float | Resources | Cost | Actual cost | user_number8 | user_integer1 | user_integer2 | user_number7 | change id | RENZ % COMPLETE | Claimed This Month | P_811 | P_711 | CCAD BUILDING(SET) | CCAD PHASE(SET) | CCAD FLOOR(SET) | CCAD ZONE(SET) | CCAD WORK(SET) | CCAD SECTION(SET) | CCAD SERIAL No.(SET) | CCAD RESPONSIBILITY(SET) | CCAD CBS(SET) | CCAD BILL(SET) | CCAD HANDOVER(SET) | CCAD TAG(SET) | CCAD REV(SET) | CCAD (VO) | CCADACF (SET) | CCAD CSA | CCAD SSCF | Act Selector % | Change Order # | NEW ACTIVITY ID | CCAD DIVISION(SET) | July2011 Target% Complete | CCAD SUB ZONE MEP(SET) | U% | CCAD MEQ |
| --- | --- | --- | --- | --- | --- | --- | --- | --- | --- | --- | --- | --- | --- | --- | --- | --- | --- | --- | --- | --- | --- | --- | --- | --- | --- | --- | --- | --- | --- | --- | --- | --- | --- | --- | --- | --- | --- | --- | --- | --- | --- | --- | --- | --- | --- | --- | --- | --- | --- |
|  | 03 | **Pump, Fan Room** |  | 2011-05-23 | 2012-12-09 |  |  |  |  |  |  |  |  |  |  |  |  |  |  |  |  |  |  |  |  |  |  |  |  |  |  |  |  |  |  |  |  |  |  |  |  |  |  |  |  |  |  |  |  |
| G02M109201C0 |  | GA-02 ; Metal Studs (Mech RM) | 19.88d | 2011-05-23 A | 2011-11-28 | G02M123001C0 | 85% | 2.98d | 2011-07-27 | 2011-08-18 | 72.55d | 0d | PARTITIONS [1617 h]; PARTITIONS - Metal Studs [224 m]; Cost |  |  | 0 | 0 | 0 | 0 | I05ME09201C0 | 5 | 6914.39 | 40 | 30 | GA | C | 02 | M1 | PT | 092 | 01 | PP | BILL 6 | B06 | S1 | 1F | R00 | CP | ACF06 | GP | 092 | PMS |  |  |  |  |  |  |  |
| G02M108101C0 |  | GA-02 ; Metal Door Frames (Mech RM) | 18d | 2011-07-10 A | 2012-02-11 | G02M109201C0, GNHE08101C0 FS+149d | 5% | 17.1d | 2011-08-25 | 2011-09-17 | 218.65d | 48.1d | METAL DOORS [72 h]; Cost |  |  |  |  |  |  | I05ME08101C0 |  |  |  |  | GA | C | 02 | M1 | DO | 081 | 01 | PP | BILL 6 | B06 | S1 | DF | R00 | CP | ACF06 |  | 081 |  | 316 | 1465 | 08 |  |  |  |  |
| G02M123001C0 |  | GA-02 ; 1st Fix, Inst. of Supports for MEP (Mech RM) | 72d | 2011-07-10 A | 2011-11-23 | G02S107807C0, G02S207807C0 | 40% | 43.2d | 2011-06-30 | 2011-09-24 | 44.55d | 0d | MECHANICAL [2642.4 h]; Cost [28834.6 AED] | 28,834.58 | 11,533.83 | 0 | 0 | 0 | 0 | I05ME23001C0 |  |  | 30 | 25 | GA | C | 02 | M1 | ME | 230 | 01 | PP | BILL 6 | B06 | S1 | 1F | R00 | CP | ACF04 | MEP | 230 | M1F |  |  |  | 80 | 1S |  |  |
| G02M109203C0 |  | GA-02 ; Partitions 1st face (Mech RM) | 33d | 2011-08-03 A | 2011-12-26 | G02M109201C0, GAFAF26039C0, GAFAF26041C0 FF, GAFAF26045C0 FF | 30% | 23.1d | 2012-01-12 | 2012-02-21 | 220.47d | 49.92d | PARTITIONS [224 m]; PARTITIONS [1273 h]; Cost |  |  |  |  |  |  | I05ME09203C0 |  |  | 30 | 0 | GA | C | 02 | M1 | PT | 092 | 03 | PP | BILL 6 | B06 | S1 | 2F | R00 | CP | ACF06 | GP | 092 | P1F | 314 | 1463 |  |  |  |  |  |
| G02M109601C0 |  | GA-02 ; Floor Finishes (Mech RM) | 24d | 2011-08-03 A | 2012-07-12 | G02M107101C0, G02M109205C0 | 50% | 12d | 2012-04-03 | 2012-05-01 | 136.87d | 0d | ASSORTED FLOOR FINISH [3048 h]; ASSORTED FLOOR FINISH [1692 m2]; Cost |  |  | 0 | 0 | 0 | 0 | I05ME09601C0 |  |  | 50 | 0 | GA | C | 02 | M1 | FF | 096 | 01 | PP | BILL 6 | B06 | S1 | 01 | R00 | CP | ACF06 |  | FF |  | 326 | 1501 |  |  |  | 50 |  |
| G02M121111C0 |  | GA-02 ; 1st Fix, Inst of Sprinkler main pipe (Mech RM) | 54d | 2011-09-05 A | 2012-03-03 | G02M122006C0 SS+12d, G02M123001C0 | 10% | 48.6d | 2011-12-14 | 2012-02-18 | 140.55d | 0d | MECHANICAL [876 h]; Cost [29558 AED] | 29,557.99 | 2,955.8 |  |  |  |  | I05ME21111C0 |  |  |  |  | GA | C | 02 | M1 | ME | 211 | 11 | PP | BILL 6 | B06 | S1 | 1F | R00 |  | ACF04 | MEP | 211 | M1F |  |  |  | 95 | 1S |  |  |
| G02M121119C0 |  | GA-02 ; 1st Fix, Inst of Sprinkler branch pipe (Mech RM) | 54d | 2011-09-05 A | 2012-04-29 | G02M121111C0 | 10% | 48.6d | 2012-02-18 | 2012-04-21 | 151.35d | 0d | MECHANICAL [931.2 h]; Cost [50874.3 AED] | 50,874.31 | 5,087.43 |  |  |  |  | I05ME21119C0 |  |  |  |  | GA | C | 02 | M1 | ME | 211 | 19 | PP | BILL 6 | B06 | S1 | 1F | R00 |  | ACF04 | MEP | 211 | M1F |  |  |  |  | 1S |  |  |
| G02M126001C0 |  | GA-02 ; 1st Fix, Inst of Trunking/Conduiting (Mech RM) | 54d | 2011-11-23 | 2012-01-29 | G02M123001C0 |  |  |  |  | 44.55d | 0d | ELECTRICAL [2217.6 h]; Cost |  |  |  |  |  |  | I05ME26001C0 |  | 108827.29 |  |  | GA | C | 02 | M1 | ME | 260 | 01 | PP | BILL 6 | B06 | S1 | 1F | R00 |  | ACF04 | MEP | 260 | M1F |  |  |  | 75 | 1S |  |  |
| G02M122011C0 |  | GA-02 ; 1st Fix, Inst of Drainage pipe (Mech RM) | 54d | 2011-12-10 | 2012-02-13 | G02M123001C0, G02M126001C0 SS+12d |  |  |  |  | 44.55d | 0d | PLUMBING [823.2 h]; Cost |  |  |  |  |  |  | I05ME22011C0 |  | 2625.55 |  |  | GA | C | 02 | M1 | ME | 220 | 11 | PP | BILL 6 | B06 | S1 | 1F | R00 |  | ACF04 | MEP | 220 | M1F |  |  |  | 60 | 1S |  |  |
| G02M122006C0 |  | GA-02 ; 1st Fix, Inst of Water supply pipe (Mech RM) | 54d | 2011-12-21 | 2012-02-25 | G02M122011C0 SS+10d, G02M123001C0 |  |  |  |  | 44.55d | 0d | PLUMBING [500.4 h]; Cost |  |  |  |  |  |  | I05ME22006C0 |  |  |  |  | GA | C | 02 | M1 | ME | 220 | 06 | PP | BILL 6 | B06 | S1 | 1F | R00 |  | ACF04 | MEP | 220 | M1F |  |  |  | 45 | 1S |  |  |
| G02M123013C0 |  | GA-02 ; 2nd Fix, Inst of Equipment (AHU) (Mech RM) | 48d | 2011-12-28 | 2012-02-25 | G02M109201C0 SS+6d, G02M122006C0 FF, G02M122011C0 FF, G02S107807C0, G02S207807C0 |  |  |  |  | 44.55d | 0d | MECHANICAL [10837.2 h]; Cost |  |  |  |  |  |  | I05ME23013C0 |  |  |  |  | GA | C | 02 | M1 | ME | 230 | 13 | PP | BILL 6 | B06 | S1 | 2F | R00 |  | ACF04 | MEP | 230 |  |  |  |  | 5 | 2n |  | H |
| G02M123019C0 |  | GA-02 ; 1st Fix, Inst of CHW pipe (Mech RM) | 54d | 2012-01-05 | 2012-03-10 | G02M121111C0 SS+10d, G02M123001C0 |  |  |  |  | 140.55d | 42d | MECHANICAL [1650 h]; Cost |  |  |  |  |  |  | I05ME23019C0 |  |  |  |  | GA | C | 02 | M1 | ME | 230 | 19 | PP | BILL 6 | B06 | S1 | 1F | R00 |  | ACF04 | MEP | 230 | M1F |  |  |  | 50 | 1S |  |  |
| G02M109205C0 |  | GA-02 ; Partitions Closing (Mech RM) | 36d | 2012-02-25 | 2012-04-07 | G02M109201C0, G02M109203C0, G02M122006C0, G02M122011C0, GAFOA09208C1 FF, G02M108101C0 FF |  |  |  |  | 170.55d | 0d | PARTITIONS [224 m]; PARTITIONS [1628 h]; Cost |  |  |  |  |  |  | I05ME09205C0 |  |  |  |  | GA | C | 02 | M1 | PT | 092 | 05 | PP | BILL 6 | B06 | S1 | FF | R00 |  | ACF06 | GP | 092 | P2F | 315 | 1464 |  |  |  |  |  |
| G02M123005C0 |  | GA-02 ; 1st Fix, Inst of Ducting (Mech RM) | 54d | 2012-02-25 | 2012-04-28 | G02M123001C0, G02M123013C0 |  |  |  |  | 44.55d | 0d | MECHANICAL [7458 h]; Cost |  |  |  |  |  |  | I05ME23005C0 |  |  |  |  | GA | C | 02 | M1 | ME | 230 | 05 | PP | BILL 6 | B06 | S1 | 1F | R00 |  | ACF04 | MEP | 230 | M1F |  |  |  | 50 | 1S |  |  |
| G02M126011C0 |  | GA-02 ; 1st Fix, Inst of Cable Tray (Mech RM) | 54d | 2012-02-25 | 2012-04-28 | G02M123013C0 |  |  |  |  | 98.55d | 0d | ELECTRICAL [244.8 h]; Cost |  |  |  |  |  |  | I05ME26011C0 |  |  |  |  | GA | C | 02 | M1 | ME | 260 | 11 | PP | BILL 6 | B06 | S1 | 1F | R00 |  | ACF04 | MEP | 260 | M1F |  |  |  | 65 | 1S |  |  |
| G02M109901C0 |  | GA-02 ; Wall Prime & 1st coat (Mech RM) | 24d | 2012-04-07 | 2012-05-05 | G02M109205C0 |  |  |  |  | 176.55d | 0d | WALL PAINT [108 h]; WALL PAINT [134 m2]; Cost |  |  |  |  |  |  | I05ME09901C0 |  |  |  |  | GA | C | 02 | M1 | PA | 099 | 01 | PP | BILL 6 | B06 | S1 | 01 | R00 |  | ACF06 |  | 099 |  | 328 | 1469 |  |  |  |  |  |
| G02M121123C0 |  | GA-02 ; Final Fix, Inst of Fire Extinguishers/FHC (Mech RM) | 18d | 2012-04-07 | 2012-04-28 | G02M109205C0 |  |  |  |  | 230.55d | 186d | MECHANICAL [1230 h]; Cost |  |  |  |  |  |  | I05ME21123C0 |  |  |  |  | GA | C | 02 | M1 | ME | 211 | 23 | PP | BILL 6 | B06 | S1 | FF | R00 |  | ACF07 | MEP | 211 |  |  |  |  |  | FF |  |  |
| G02M126015C0 |  | GA-02 ; Final Fix, Inst of Ceiling rose (Mech RM) | 30d | 2012-04-07 | 2012-05-12 | G02M109205C0 |  |  |  |  | 170.55d | 0d | ELECTRICAL [34.8 h]; Cost |  |  |  |  |  |  | I05ME26015C0 |  |  |  |  | GA | C | 02 | M1 | ME | 260 | 15 | PP | BILL 6 | B06 | S1 | FF | R00 |  | ACF07 | MEP | 260 |  |  |  |  |  | FF |  |  |
| G02M123015C0 |  | GA-02 ; 2nd Fix, Inst of VCD's/FD's (Mech RM) | 48d | 2012-04-28 | 2012-06-24 | G02M123005C0 |  |  |  |  | 104.55d | 6d | MECHANICAL [673.2 h]; Cost |  |  |  |  |  |  | I05ME23015C0 |  |  |  |  | GA | C | 02 | M1 | ME | 230 | 15 | PP | BILL 6 | B06 | S1 | 2F | R00 |  | ACF07 | MEP | 230 |  |  |  |  |  | 2n |  |  |
| G02M123017C0 |  | GA-02 ; 2nd Fix, Insulation of CHW pipe & Duct (Mech RM) | 54d | 2012-04-28 | 2012-07-01 | G02M123005C0, G02M123019C0 |  |  |  |  | 98.55d | 0d | MECHANICAL [1699.2 h]; Cost |  |  |  |  |  |  | I05ME23017C0 |  |  |  |  | GA | C | 02 | M1 | ME | 230 | 17 | PP | BILL 6 | B06 | S1 | 2F | R00 |  | ACF07 | MEP | 230 |  |  |  |  |  | 2n |  |  |
| G02M126007C0 |  | GA-02 ; 2nd Fix, Cable Pulling (Mech RM) | 48d | 2012-04-28 | 2012-06-24 | G02M126011C0 |  |  |  |  | 104.55d | 60d | ELECTRICAL [1117.2 h]; Cost |  |  |  |  |  |  | I05ME26007C0 |  |  |  |  | GA | C | 02 | M1 | ME | 260 | 07 | PP | BILL 6 | B06 | S1 | 2F | R00 |  | ACF07 | MEP | 260 |  |  |  |  |  | 2n |  |  |
| G02M127010C0 |  | GA-02 ; 1st Fix, Inst of Trunking for ELV system (Mech RM) | 54d | 2012-04-28 | 2012-07-01 | G02M123005C0 |  |  |  |  | 44.55d | 0d | ELECTRICAL [1467.6 h]; Cost |  |  |  |  |  |  | I05ME27010C0 |  |  |  |  | GA | C | 02 | M1 | ME | 270 | 10 | PP | BILL 6 | B06 | S1 | 1F | R00 |  | ACF04 | MEP | 270 | M1F |  |  |  |  | 1S |  |  |
| G02M121115C0 |  | GA-02 ; 2nd Fix, Inst of Sprinkler droppers (Mech RM) | 48d | 2012-04-29 | 2012-06-25 | G02M109205C0, G02M121119C0 |  |  |  |  | 151.35d | 0d | MECHANICAL [1734 h]; Cost |  |  |  |  |  |  | I05ME21115C0 |  |  |  |  | GA | C | 02 | M1 | ME | 211 | 15 | PP | BILL 6 | B06 | S1 | 2F | R00 |  | ACF07 | MEP | 211 |  |  |  |  |  | 2n |  |  |
| G02M109903C0 |  | GA-02 ; Wall - Final Paint (Mech RM) | 24d | 2012-05-05 | 2012-06-02 | G02M109901C0 |  |  |  |  | 188.55d | 0d | WALL PAINT [58 h]; WALL PAINT [72 m2]; Cost |  |  |  |  |  |  | I05ME09903C0 |  |  |  |  | GA | C | 02 | M1 | PA | 099 | 03 | PP | BILL 6 | B06 | S1 | 02 | R00 |  | ACF06 |  | 099 |  | 329 | 1470 |  |  |  |  |  |
| G02M126019C0 |  | GA-02 ; Final Fix, Inst of Light fittings (Mech RM) | 48d | 2012-05-12 | 2012-07-08 | G02M109901C0, G02M126015C0 |  |  |  |  | 170.55d | 126d | ELECTRICAL [7791.6 h]; Cost |  |  |  |  |  |  | I05ME26019C0 |  |  |  |  | GA | C | 02 | M1 | ME | 260 | 19 | PP | BILL 6 | B06 | S1 | FF | R00 |  | ACF07 | MEP | 260 |  |  |  |  |  | FF |  |  |
| G02M126017C0 |  | GA-02 ; Final Fix, Inst of Switch/Sockets (Mech RM) | 12d | 2012-06-02 | 2012-06-17 | G02M109903C0 |  |  |  |  | 188.55d | 144d | ELECTRICAL [132 h]; Cost |  |  |  |  |  |  | I05ME26017C0 |  |  |  |  | GA | C | 02 | M1 | ME | 260 | 17 | PP | BILL 6 | B06 | S1 | FF | R00 |  | ACF07 | MEP | 260 |  |  |  |  |  | FF |  |  |
| G02M107101C0 |  | GA-02 ; Waterproofing (Mech RM) | 15d | 2012-06-10 | 2012-06-28 | G02M123013C0, GAFWA00109M0 |  |  |  |  | 136.87d | 0d | THERMAL & MOISTURE [64 h]; THERMAL & MOISTURE [411 m2]; Cost |  |  |  |  |  |  | I05ME09901C0 |  |  |  |  | GA | C | 02 | M1 | FF | 071 | 01 | PP | BILL 6 | B06 | S1 | 01 | R00 |  | ACF03 |  | 071 |  | 328 | 1469 |  |  |  |  |  |
| G02M121117C0 |  | GA-02 ; 2nd Fix, Inst of Zone Control Valve (Mech RM) | 48d | 2012-06-10 | 2012-08-06 | G02M123013C0, G02M123019C0, GAFWA00109M0 |  |  |  |  | 96.87d | 22.32d | MECHANICAL [1000.8 h]; Cost |  |  |  |  |  |  | I05ME21117C0 |  |  |  |  | GA | C | 02 | M1 | ME | 211 | 17 | PP | BILL 6 | B06 | S1 | 2F | R00 |  | ACF07 | MEP | 211 |  |  |  |  |  | 2n |  |  |
| G02M123011C0 |  | GA-02 ; 2nd Fix, Inst of Equipment (FCU,FAN,PUMP) (Mech RM) | 60d | 2012-06-10 | 2012-08-22 | G02M123013C0, GAFWA00109M0 |  |  |  |  | 54.87d | 0d | MECHANICAL [601.2 h]; Cost |  |  |  |  |  |  | I05ME23011C0 |  |  |  |  | GA | C | 02 | M1 | ME | 230 | 11 | PP | BILL 6 | B06 | S1 | 2F | R00 |  | ACF04 | MEP | 230 |  |  |  |  |  | 2n |  | H |
| G02M126009C0 |  | GA-02 ; 2nd Fix, Inst of Equipment (DB, TR, SG) (Mech RM) | 60d | 2012-06-10 | 2012-08-22 | G02M123013C0, GAFWA00109M0 |  |  |  |  | 84.87d | 10.32d | ELECTRICAL [946.8 h]; Cost |  |  |  |  |  |  | I05ME26009C0 |  |  |  |  | GA | C | 02 | M1 | ME | 260 | 09 | PP | BILL 6 | B06 | S1 | 2F | R00 |  | ACF04 | MEP | 260 |  |  |  |  |  | 2n |  | E |
| G02M127020C0 |  | GA-02 ; 2nd Fix, Inst of ELV Equipment (Panels) (Mech RM) | 60d | 2012-06-10 | 2012-08-22 | G02M123013C0, GAFWA00109M0 |  |  |  |  | 84.87d | 10.32d | ELECTRICAL [1618.8 h]; Cost |  |  |  |  |  |  | I05ME27020C0 |  |  |  |  | GA | C | 02 | M1 | ME | 270 | 20 | PP | BILL 6 | B06 | S1 | 2F | R00 |  | ACF04 | MEP | 270 |  |  |  |  |  | 2n |  | E |
| G02M121121C0 |  | GA-02 ; Final Fix, Inst of Sprinklers head (Mech RM) | 30d | 2012-06-25 | 2012-07-30 | G02M121115C0, G02M121115C0 FF |  |  |  |  | 151.35d | 106.8d | MECHANICAL [297.6 h]; Cost |  |  |  |  |  |  | I05ME21121C0 |  |  |  |  | GA | C | 02 | M1 | ME | 211 | 21 | PP | BILL 6 | B06 | S1 | FF | R00 |  | ACF07 | MEP | 211 |  |  |  |  |  | FF |  |  |
| G02M123023C0 |  | GA-02 ; Final Fix, Inst of Flexible Duct & Plenum boxes (Mech RM) | 42d | 2012-07-01 | 2012-08-21 | G02M123015C0, G02M123017C0 |  |  |  |  | 98.55d | 0d | MECHANICAL [1962 h]; Cost |  |  |  |  |  |  | I05ME23023C0 |  |  |  |  | GA | C | 02 | M1 | ME | 230 | 23 | PP | BILL 6 | B06 | S1 | FF | R00 |  | ACF07 | MEP | 230 |  |  |  |  |  | FF |  |  |
| G02M127001C0 |  | GA-02 ; 1st Fix, Wiring/ Cabling work (Mech RM) | 54d | 2012-07-01 | 2012-09-04 | G02M126001C0, G02M126011C0, G02M127010C0 |  |  |  |  | 44.55d | 0d | ELECTRICAL [242.4 h]; Cost |  |  |  |  |  |  | I05ME27001C0 |  |  |  |  | GA | C | 02 | M1 | ME | 270 | 01 | PP | BILL 6 | B06 | S1 | 1F | R00 |  | ACF04 | MEP | 270 | M1F |  |  |  |  | 1S |  |  |
| G02M108105C0 |  | GA-02 ; Metal Doors (Mech RM) | 18d | 2012-07-12 | 2012-08-02 | G02M108101C0, G02M109901C0, G02M109601C0 |  |  |  |  | 136.87d | 0d | METAL DOORS [260 h]; METAL DOORS [26 no]; Cost |  |  |  |  |  |  | I05ME08105C0 |  |  |  |  | GA | C | 02 | M1 | DO | 081 | 05 | PP | BILL 6 | B06 | S1 | DR | R00 |  | ACF06 |  | 081 |  | 317 | 1466 | 08 |  |  |  |  |
| G02M122003C0 |  | GA-02 ; Final Fix, Inst of All drain (Mech RM) | 18d | 2012-07-12 | 2012-08-02 | G02M109601C0, GZ9GZ22059R2 FF, DV10GZ22059R2 FF |  |  |  |  | 147.87d | 103.32d | PLUMBING [644.4 h]; Cost |  |  |  |  |  |  | I05ME22003C0 |  |  |  |  | GA | C | 02 | M1 | ME | 220 | 03 | PP | BILL 6 | B06 | S1 | FF | R00 |  | ACF07 | MEP | 220 |  |  |  |  |  | FF |  |  |
| G02M108709C0 |  | GA-02 ; Ironmongery (Mech RM) | 20d | 2012-08-02 | 2012-08-28 | G02M108105C0 |  |  |  |  | 136.87d | 92.32d | IRONMONGERY [110 h]; IRONMONGERY [11 no]; Cost |  |  |  |  |  |  | I05ME08709C0 |  |  |  |  | GA | C | 02 | M1 | DO | 087 | 09 | PP | BILL 6 | B06 | S1 | IM | R00 |  | ACF06 |  | 087 |  | 322 | 1467 | 08 |  |  |  |  |
| G02M123021C0 |  | GA-02 ; Final Fix, Inst of Grilles & Diffusers (Mech RM) | 36d | 2012-08-21 | 2012-10-02 | G02M123023C0 |  |  |  |  | 98.55d | 54d | MECHANICAL [1030.8 h]; Cost |  |  |  |  |  |  | I05ME23021C0 |  |  |  |  | GA | C | 02 | M1 | ME | 230 | 21 | PP | BILL 6 | B06 | S1 | FF | R00 |  | ACF07 | MEP | 230 |  |  |  |  |  | FF |  |  |
| G02M123009C0 |  | GA-02 ; 2nd Fix, Inst of VAV'S CHW connection (Mech RM) | 48d | 2012-08-22 | 2012-10-17 | G02M123011C0 |  |  |  |  | 54.87d | 0d | MECHANICAL [788.4 h]; Cost |  |  |  |  |  |  | I05ME23009C0 |  |  |  |  | GA | C | 02 | M1 | ME | 230 | 09 | PP | BILL 6 | B06 | S1 | 2F | R00 |  | ACF07 | MEP | 230 |  |  |  |  |  | 2n |  |  |
| G02M126005C0 |  | GA-02 ; 2nd Fix, Wiring for Power/Lighting/Emergency (Mech RM) | 48d | 2012-09-04 | 2012-11-01 | G02M126001C0, G02M126007C0, G02M126011C0, G02M127001C0, G02M127010C0 |  |  |  |  | 44.55d | 0d | ELECTRICAL [242.4 h]; Cost |  |  |  |  |  |  | I05ME26005C0 |  |  |  |  | GA | C | 02 | M1 | ME | 260 | 05 | PP | BILL 6 | B06 | S1 | 2F | R00 |  | ACF07 | MEP | 260 |  |  |  |  |  | 2n |  |  |
| G02M127003C0 |  | GA-02 ; Final Fix, BMS connection work to Equipment (Mech RM) | 48d | 2012-09-04 | 2012-11-01 | G02M121117C0, G02M123011C0, G02M123013C0, G02M123015C0, G02M126009C0, G02M127001C0, G02M127020C0, GAFWA00109M0 |  |  |  |  | 74.55d | 30d | ELECTRICAL [10323.6 h]; Cost |  |  |  |  |  |  | I05ME27003C0 |  |  |  |  | GA | C | 02 | M1 | ME | 270 | 03 | PP | BILL 6 | B06 | S1 | FF | R00 |  | ACF07 | MEP | 270 |  |  |  |  |  | FF |  |  |
| G02M127030C0 |  | GA-02 ; Final Fix, Inst of ELV device (Detector/Speaker) (Mech RM) | 30d | 2012-10-17 | 2012-11-25 | G02M109901C0, G02M123009C0, G02M127020C0, GZ9GZ26562R2 FF |  |  |  |  | 54.87d | 10.32d | ELECTRICAL [710.4 h]; Cost |  |  |  |  |  |  | I05ME27030C0 |  |  |  |  | GA | C | 02 | M1 | ME | 270 | 30 | PP | BILL 6 | B06 | S1 | FF | R00 |  | ACF07 | MEP | 270 |  |  |  |  |  | FF |  |  |
| G02M126013C0 |  | GA-02 ; Final Fix, Termination & Gladding of Cables (Mech RM) | 30d | 2012-11-01 | 2012-12-09 | G02M126005C0 |  |  |  |  | 44.55d | 0d | ELECTRICAL [62.4 h]; Cost |  |  |  |  |  |  | I05ME26013C0 |  |  |  |  | GA | C | 02 | M1 | ME | 260 | 13 | PP | BILL 6 | B06 | S1 | FF | R00 |  | ACF07 | MEP | 260 |  |  |  |  |  | FF |  |  |

| ID | WBS | Activity | Duration | Start | Finish | Predecessors | Complete | Remaining | Planned start | Planned finish | Total float | Free float | Resources | user_number8 | user_integer1 | user_integer2 | user_number7 | Change Order # | NEW ACTIVITY ID | change id | P_811 | P_711 | CCAD BUILDING(SET) | CCAD PHASE(SET) | CCAD DIVISION(SET) | CCAD FLOOR(SET) | CCAD ZONE(SET) | CCAD WORK(SET) | CCAD SECTION(SET) | CCAD SERIAL No.(SET) | CCAD RESPONSIBILITY(SET) | CCAD CBS(SET) | CCAD BILL(SET) | CCAD HANDOVER(SET) | CCAD TAG(SET) | CCAD REV(SET) | CCAD (VO) | CCADACF (SET) | CCAD SSCF | RENZ % COMPLETE | Claimed This Month | CCAD CSA | Phase | Area/ Department | Grids | Are | Weight & Nos | Process | Levels | ACCESS DATES |
| --- | --- | --- | --- | --- | --- | --- | --- | --- | --- | --- | --- | --- | --- | --- | --- | --- | --- | --- | --- | --- | --- | --- | --- | --- | --- | --- | --- | --- | --- | --- | --- | --- | --- | --- | --- | --- | --- | --- | --- | --- | --- | --- | --- | --- | --- | --- | --- | --- | --- | --- |
|  | 05 | **Roof** |  | 2011-08-03 | 2012-07-02 |  |  |  |  |  |  |  |  |  |  |  |  |  |  |  |  |  |  |  |  |  |  |  |  |  |  |  |  |  |  |  |  |  |  |  |  |  |  |  |  |  |  |  |  |  |
| G02RF07101C0 |  | GA-02 ; Water Proofing Membrane (Roof) | 21d | 2011-08-03 A | 2012-06-18 | G02BM03301C0, G02RF05501C0 | 25% | 15.75d | 2012-02-11 | 2012-03-06 | 18.65d | 0d | THERMAL & MOISTURE [584 h]; Cost | 0 | 0 | 0 | 0 | 302 | 335 | G02RF07101C0 | 10 | 0 | GA | C | 03 | 02 | RF | FF | 071 | 01 | PP | BILL 6 | B06 | S1 | 01 | R00 | CP | ACF03 | 071 |  |  |  |  |  |  |  |  |  |  |  |
| G02RF05501C0 |  | GA-02 ; Parapet Balustrade Steel (Roof) | 12d | 2012-05-15 | 2012-05-29 | G02S103399C0, G02S203399C0, G03CO04408C0 SS |  |  |  |  | 18.65d | 0d | SECONDARY STEEL [14 h]; Cost |  |  |  |  | 302 | 335 | G02RF05501C0 |  |  | GA | C | 03 | 02 | RF | SW | 055 | 01 | PP | BILL 6 | B06 | S1 | 01 | R00 |  | ACF03 | 055 |  |  |  |  |  |  |  |  |  |  |  |
| G02RF09601C0 |  | GA-02 ; Paving / Surfacing (Roof) | 12d | 2012-06-18 | 2012-07-02 | G02RF07101C0 |  |  |  |  | 18.65d | 0d | ASSORTED FLOOR FINISH [608 h]; Cost |  |  |  |  | 302 | 335 | G02RF09601C0 |  |  | GA | C | 03 | 02 | RF | FF | 096 | 01 | PP | BILL 6 | B06 | S1 | 08 | R00 |  | ACF09 | PV |  |  |  |  |  |  |  |  |  |  |  |
|  | 06 | **BMU** |  | 2011-05-04 | 2011-12-20 |  |  |  |  |  |  |  |  |  |  |  |  |  |  |  |  |  |  |  |  |  |  |  |  |  |  |  |  |  |  |  |  |  |  |  |  |  |  |  |  |  |  |  |  |  |
| G02BM03301C0 |  | GA-02 ; Concrete Plinth (BMU-A6) | 18d | 2011-05-04 A | 2011-05-31 A | G02S103399C0, G02S203399C0 | 100% |  | 2011-06-02 | 2011-06-23 |  |  | CONCRETE [144 h]; Cost |  |  |  |  | 302 | 335 | G02BM03301C0 |  |  | GA | C | 03 | 02 | BM | CT | 033 | 01 |  | BILL 6 | B06 | S1 | 10 | R00 |  | ACF03 | 033 | 95 | 1969.8 |  |  |  |  |  |  |  |  |  |
| G02BM05501C0 |  | GA-02 ; Steel Tracking (BMU-A6) | 48d | 2011-07-10 A | 2011-09-29 A | G02BM03301C0, OGNMU00053S0 | 100% |  | 2011-06-30 | 2011-08-24 |  |  | SECONDARY STEEL [44 h]; Cost |  |  |  |  | 302 | 335 | G02BM05501C0 | 95 | 30 | GA | C | 03 | 02 | BM | BMU | 055 | 01 | PP | BILL 6 | B06 | S1 | BMU | R00 | CP | ACF03 | BMU |  |  | BMU |  |  |  |  |  |  |  |  |
| G02BM11001C0 |  | GA-02 ; BMU Machine (BMU-A6) | 36d | 2011-11-03 | 2011-12-20 | G02BM05501C0 FS+30d |  |  |  |  | 206d | 187.35d | FF&E [194 h]; FF&E [64.56 no]; MECHANICAL [15201 h]; Cost |  |  |  |  | 302 | 335 | G02BM11001C0 |  |  | GA | C | 03 | 02 | BM | BMU | 110 | 01 | PP | BILL 6 | B06 | S1 | BMU | R00 |  |  | BMU |  |  | BMU |  |  |  |  |  |  |  |  |
|  | 07 | **Solar Panel** |  | 2011-05-31 | 2012-07-30 |  |  |  |  |  |  |  |  |  |  |  |  |  |  |  |  |  |  |  |  |  |  |  |  |  |  |  |  |  |  |  |  |  |  |  |  |  |  |  |  |  |  |  |  |  |
| G02SP03301C0 |  | GA-02 ; Concrete Plinth (Solar Panel) | 18d | 2011-05-31 A | 2011-08-30 A | G02BM03301C0 FF, G02S103399C0, G02S203399C0 | 100% |  | 2011-05-31 | 2011-06-20 |  |  | CONCRETE [5088 h]; CONCRETE [128 m3]; Cost |  |  |  |  | 302 | 335 | G02SP03301C0 | 100 | 40 | GA | C | 03 | 02 | SP | CT | 033 | 01 | PP | BILL 6 | B06 | S1 | 10 | R00 |  | ACF03 | 033 |  |  |  |  |  |  |  |  |  |  |  |
| G02SP05501C0 |  | GA-02 ; Steel Frame (Solar Panel) | 24d | 2012-07-02 | 2012-07-30 | G02RF09601C0, G02SP03301C0, GV09GZ03352R2 |  |  |  |  | 18.65d | 0d | SECONDARY STEEL [44 h]; Cost |  |  |  |  | 302 | 335 | G02SP05501C0 |  |  | GA | C | 03 | 02 | SP | SW | 055 | 01 | PP | BILL 6 | B06 | S1 | 03 | R00 |  | ACF03 | 055 |  |  |  |  |  |  |  |  |  |  |  |
| G02SP22001C0 |  | GA-02 ; Plumbing Pipe (Solar Panel) | 0d | 2012-07-30 | 2012-07-30 | G02SP05501C0 |  |  |  |  | 159.65d | 0d | Cost |  |  |  |  | 302 | 335 | G02SP22001C0 |  |  | GA | C | 03 | 02 | SP | ME | 220 | 01 | PP | BILL 6 | B06 | S1 | RI | R00 |  | ACF04 | 220 |  |  | MEP |  |  |  |  |  |  |  |  |
| G02SP23001C0 |  | GA-02 ; Solar Panel (Solar Panel) | 0d | 2012-07-30 | 2012-07-30 | G02RF09601C0, G02SP22001C0 |  |  |  |  | 159.65d | 23.25d | Cost |  |  |  |  | 302 | 335 | G02SP23001C0 |  |  | GA | C | 03 | 02 | SP | ME | 230 | 01 | PP | BILL 6 | B06 | S1 | RI | R00 |  | ACF07 | 230 |  |  | MEP |  |  |  |  |  |  |  |  |
|  | 10 | **Precommissioning Tesing & snagging** |  | 2012-12-09 | 2013-01-09 |  |  |  |  |  |  |  |  |  |  |  |  |  |  |  |  |  |  |  |  |  |  |  |  |  |  |  |  |  |  |  |  |  |  |  |  |  |  |  |  |  |  |  |  |  |
| G02TS01801C0 |  | GA-02 ; MEP de-snag, FIREM sign-off | 9d | 2012-12-09 | 2012-12-19 | G02M121123C0, G02M126015C0, G02M126017C0, G02M126019C0, G02M121121C0, G02M123023C0, G02M122003C0, G02M123021C0, G02M127003C0, G02M126013C0, G02M127030C0 |  |  |  |  | 44.55d | 0d | TESTING & COMMISSIONING [1020 h]; Cost |  |  |  |  |  |  | G02TS01801C0 |  |  | GA | C |  | 02 | TS | SC | 018 | 01 | PP | BILL 6 | B06 | S1 | 01 | R00 |  | ACF07 | 018 |  |  |  |  |  |  |  |  |  |  |  |
| G02TS01802C0 |  | GA-02 ; Touch-up & Clean / JV inspection /CIR /De-snag | 17.25d | 2012-12-19 | 2013-01-09 | G02M107101C0, G02M108709C0, G02M109601C0, G02M109903C0, G02TS01801C0 |  |  |  |  | 44.55d | 0d | TESTING & COMMISSIONING [170 h]; Cost |  |  |  |  |  |  | G02TS01802C0 |  |  | GA | C |  | 02 | TS | SC | 018 | 02 | PP | BILL 6 | B06 | S1 | 02 | R00 |  | ACF07 | 018 |  |  |  |  |  |  |  |  |  |  |  |
| G02TS01803C0 |  | GA-02 ; Consultant's final de-snag inspection | 0d | 2013-01-09 | 2013-01-09 | G02TS01802C0, G03TS01803C0 |  |  |  |  | 44.55d | 0d | Cost |  |  |  |  |  |  | G02TS01803C0 |  |  | GA | C |  | 02 | TS | SC | 018 | 03 | PP | BILL 6 | B06 | S1 | 03 | R00 |  | ACF07 | 018 |  |  |  |  |  |  |  |  |  |  |  |
|  | 03 | **Level 3** |  | 2011-01-26 | 2012-09-18 |  |  |  |  |  |  |  |  |  |  |  |  |  |  |  |  |  |  |  |  |  |  |  |  |  |  |  |  |  |  |  |  |  |  |  |  |  |  |  |  |  |  |  |  |  |
|  | 01 | **Structure & Envelopment** |  | 2011-01-26 | 2012-03-03 |  |  |  |  |  |  |  |  |  |  |  |  |  |  |  |  |  |  |  |  |  |  |  |  |  |  |  |  |  |  |  |  |  |  |  |  |  |  |  |  |  |  |  |  |  |
| G03S105101C0 |  | GA-03 ; Erection of Structural Steel of 3rd FLR (Zone S1) | 11.12d | 2011-01-26 A | 2011-04-17 A | G02S105103C0 | 100% |  | 2011-03-05 | 2011-03-17 |  |  | STRUCTURAL STEEL [5771 h]; STRUCTURAL STEEL [191 T(Fe)]; Cost |  |  |  |  |  |  | G03S105101C0 |  |  | GA | C |  | 03 | S1 | ST | 051 | 01 |  | BILL 6 | B06 | S1 | 01 | R00 |  | ACF03 | 051 | 100 |  | ST | Z2 | GA | P12 | R | A6 | EREC | POD2 |  |
| G03S105103C0 |  | GA-03 ; Alignment & welding of 3rd FLR (Zone S1) | 5d | 2011-01-26 A | 2011-04-21 A | G03S105101C0 | 100% |  | 2011-03-19 | 2011-03-24 |  |  | Cost |  |  |  |  |  |  | G03S105103C0 |  |  | GA | C |  | 03 | S1 | ST | 051 | 03 |  | BILL 6 | B06 | S1 | 02 | R00 |  | ACF03 | 051 | 100 |  | ST | Z2 | GA | P12 | R | A6 | EREC | POD2 |  |
| G03S205101C0 |  | GA-03 ; Erection of Structural Steel of 3rd FLR (Zone S2) | 11.11d | 2011-04-02 A | 2011-04-18 A | G02S205103C0 | 100% |  | 2011-03-17 | 2011-03-30 |  |  | STRUCTURAL STEEL [11093 h]; STRUCTURAL STEEL [366 T(Fe)]; Cost |  |  |  |  |  |  | G03S205101C0 |  |  | GA | C |  | 03 | S2 | ST | 051 | 01 |  | BILL 6 | B06 | S1 | 01 | R00 |  | ACF03 | 051 | 100 |  | ST | Z2 | GA | P12 | R | A6 | EREC | POD2 |  |
| G03S205103C0 |  | GA-03 ; Alignment & welding of 3rd FLR (Zone S2) | 5d | 2011-04-07 A | 2011-04-20 A | G03S205101C0 | 100% |  | 2011-03-31 | 2011-04-06 |  |  | Cost |  |  |  |  |  |  | G03S205103C0 |  |  | GA | C |  | 03 | S2 | ST | 051 | 03 |  | BILL 6 | B06 | S1 | 02 | R00 |  | ACF03 | 051 | 100 |  | ST | Z2 | GA | P12 | R | A6 | EREC | POD2 |  |
| G03S105305C0 |  | GA-03 ; Metal Decking 3rd FLR (Zone S1) | 10d | 2011-04-18 A | 2011-04-23 A | G03S105103C0 | 100% |  | 2011-03-24 | 2011-04-05 |  |  | METAL DECKING [1585 h]; METAL DECKING [2005 m2]; Cost |  |  |  |  |  |  | G03S105305C0 |  |  | GA | C |  | 03 | S1 | ST | 053 | 05 |  | BILL 6 | B06 | S1 | 03 | R00 |  | ACF03 | 053 | 100 |  | ST | Z2 | GA | P12 | R | A6 | MDEC | POD2 | ACCESS |
| G03S205305C0 |  | GA-03 ; Metal Decking 3rd FLR (Zone S2) | 12d | 2011-04-21 A | 2011-04-25 A | G03S205103C0 | 100% |  | 2011-04-06 | 2011-04-20 |  |  | METAL DECKING [1185 h]; METAL DECKING [1500 m2]; Cost |  |  |  |  |  |  | G03S205305C0 |  |  | GA | C |  | 03 | S2 | ST | 053 | 05 |  | BILL 6 | B06 | S1 | 03 | R00 |  | ACF03 | 053 | 100 |  | ST | Z2 | GA | P12 | R | A6 | MDEC | POD2 |  |
| G03S107807C0 |  | GA-03 ; Cementitious Fire Proofing at 3rd FLR (Zone S1) | 9d | 2011-05-15 A | 2011-06-02 A | G02S107807C0, G03S103399C0 | 100% |  | 2011-06-21 | 2011-07-02 |  |  | Labor General [80 h]; Cost |  |  |  |  |  |  | G03S107807C0 |  |  | GA | C |  | 03 | S1 | ST | 078 | 07 |  | BILL 6 | B06 | S1 | 04 | R00 |  | ACF03 | 078 | 75 | 5934.89 | ST | Z2 | GA | P12 | R | A6 | FIRE | POD2 |  |
| G03S207807C0 |  | GA-03 ; Cementitious Fire Proofing at 3rd FLR (Zone S2) | 9d | 2011-05-15 A | 2011-06-02 A | G02S207807C0, G03S203399C0 | 100% |  | 2011-06-21 | 2011-07-02 |  |  | Labor General [80 h]; Cost |  |  |  |  |  |  | G03S207807C0 |  |  | GA | C |  | 03 | S2 | ST | 078 | 07 |  | BILL 6 | B06 | S1 | 04 | R00 |  | ACF03 | 078 | 75 | 4440.79 | ST | Z2 | GA | P12 | R | A6 | FIRE | POD2 |  |
| G03S103399C0 |  | GA-03 ; Concrete on Metal Decking 3rd FLR (Zone S1) | 10d | 2011-05-17 A | 2011-05-24 A | G03S105305C0 | 100% |  | 2011-04-05 | 2011-04-17 |  |  | CONCRETE [13360 h]; CONCRETE [336 m3]; Cost |  |  |  |  |  |  | G03S103399C0 |  |  | GA | C |  | 03 | S1 | CT | 033 | 99 |  | BILL 6 | B06 | S1 | 08 | R00 |  | ACF03 | 033 | 100 |  |  | Z2 | GA | P12 | R | A6 | MDEC | POD2 |  |
| G03S203399C0 |  | GA-03 ; Concrete on Metal Decking 3rd FLR (Zone S2) | 10d | 2011-05-17 A | 2011-05-25 A | G03S205305C0 | 100% |  | 2011-04-20 | 2011-05-02 |  |  | CONCRETE [9816 h]; CONCRETE [247 m3]; Cost |  |  |  |  |  |  | G03S203399C0 |  |  | GA | C |  | 03 | S2 | CT | 033 | 99 |  | BILL 6 | B06 | S1 | 08 | R00 |  | ACF03 | 033 | 100 |  |  | Z2 | GA | P12 | R | A6 | MDEC | POD2 |  |
| G03CO04405C1 |  | GA-03 ; Louvers Bracket (Common Zone) | 30d | 2011-10-06 | 2011-11-14 | G03S107807C0 FS+105d, G03S207807C0 |  |  |  |  | 286.5d | 0d | FACADE SAND LOUVERS [633.7 h]; Cost |  |  |  |  |  |  | I05CO04405C0 |  |  | GA | C |  | 03 | CO | FA | 044 | 05 | PP | BILL 6 | B06 | S2 | FSL | R00 |  | ACF05 | 044 |  |  | FA |  |  |  |  |  |  |  |  |
| G03CO04417C1 |  | GA-03 ; Louvers transom & mullion (Common Zone) | 60d | 2011-11-14 | 2012-01-26 | G03CO04405C1 |  |  |  |  | 286.5d | 0d | FACADE SAND LOUVERS [2533.7 h]; Cost |  |  |  |  |  |  | I05CO04417C0 |  |  | GA | C |  | 03 | CO | FA | 044 | 17 | PP | BILL 6 | B06 | S2 | FSL | R00 |  | ACF05 | 044 |  |  | FA |  |  |  |  |  |  |  |  |
| G03CO04413C1 |  | GA-03 ; Louvers installation (Common Zone) | 30d | 2012-01-26 | 2012-03-03 | G03CO04417C1 |  |  |  |  | 286.5d | 150.1d | FACADE STEEL GRILL [1056 h]; Cost |  |  |  |  |  |  | I05CO04413C0 |  |  | GA | C |  | 03 | CO | FA | 044 | 13 | PP | BILL 6 | B06 | S2 | FSL | R00 |  | ACF05 | 044 |  |  | FA |  |  |  |  |  |  |  |  |

| ID | WBS | Activity | Duration | Start | Finish | Predecessors | Complete | Remaining | Planned start | Planned finish | Total float | Free float | Resources | Cost | Actual cost | Change Order # | NEW ACTIVITY ID | change id | P_811 | P_711 | CCAD BUILDING(SET) | CCAD PHASE(SET) | CCAD DIVISION(SET) | CCAD FLOOR(SET) | CCAD ZONE(SET) | CCAD WORK(SET) | CCAD SECTION(SET) | CCAD SERIAL No.(SET) | CCAD RESPONSIBILITY(SET) | CCAD CBS(SET) | CCAD BILL(SET) | CCAD HANDOVER(SET) | CCAD TAG(SET) | CCAD REV(SET) | CCAD (VO) | CCADACF (SET) | CCAD SSCF | user_number8 | user_integer1 | user_integer2 | user_number7 | RENZ % COMPLETE | July2011 Target% Complete | CCAD SUB ZONE MEP(SET) | CCAD CSA | Claimed This Month |
| --- | --- | --- | --- | --- | --- | --- | --- | --- | --- | --- | --- | --- | --- | --- | --- | --- | --- | --- | --- | --- | --- | --- | --- | --- | --- | --- | --- | --- | --- | --- | --- | --- | --- | --- | --- | --- | --- | --- | --- | --- | --- | --- | --- | --- | --- | --- |
|  | 03 | **Roof** |  | 2011-08-10 | 2012-08-28 |  |  |  |  |  |  |  |  |  |  |  |  |  |  |  |  |  |  |  |  |  |  |  |  |  |  |  |  |  |  |  |  |  |  |  |  |  |  |  |  |  |
| G03RF07101C0 |  | GA-03 ; Water Proofing Membrane (Roof) | 18d | 2011-08-10 A | 2012-08-28 | G03CO04404C0, G03CO04431C0, GP3CO04410C10, GP3CO04413C1, GP2CO04410C10, GP2CO04407C10, G01CO04407C0, G02CO04407C0, G02SP23001C0, G03CO04413C1 | 100% | 0d | 2012-03-20 | 2012-04-10 | 136.4d | 0d | Cost |  |  | 302 | 335 | G03RF07101C0 | 10 | 0 | GA | C | 03 | 03 | RF | FF | 071 | 01 | PP | BILL 6 | B06 | S1 | 01 | R00 | CP | ACF03 | 071 |  |  |  |  |  |  |  |  |  |
| G03RF09601C0 |  | GA-03 ; Paving / Surfacing (Roof) | 0d | 2012-08-28 | 2012-08-28 | G03RF07101C0 |  |  |  |  | 136.4d | 0d | Cost |  |  | 302 | 335 | G03RF09601C0 |  |  | GA | C | 03 | 03 | RF | FF | 096 | 01 | PP | BILL 6 | B06 | S1 | 08 | R00 |  | ACF09 | PV |  |  |  |  |  |  |  |  |  |
|  | 10 | **Precommissioning Tesing & snagging** |  | 2012-08-28 | 2012-09-18 |  |  |  |  |  |  |  |  |  |  |  |  |  |  |  |  |  |  |  |  |  |  |  |  |  |  |  |  |  |  |  |  |  |  |  |  |  |  |  |  |  |
| G03TS01801C0 |  | GA-03 ; Touch-up & Clean / JV inspection /CIR /De-snag | 18d | 2012-08-28 | 2012-09-18 | G03CO04404C0, G03CO04408C0, G03CO04413C1, G03RF09601C0, GAFT1405509C0, GAFT1705509C0, GAFT1805509C0, GAFWA00109M0 |  |  |  |  | 136.4d | 0d | TESTING & COMMISSIONING [128 h]; Cost |  |  |  |  | G03TS01802C0 |  |  | GA | C |  | 03 | TS | SC | 018 | 02 | PP | BILL 6 | B06 | S1 | 02 | R00 |  | ACF07 | 018 |  |  |  |  |  |  |  |  |  |
| G03TS01803C0 |  | GA-03 ; Consultant's final de-snag inspection | 0d | 2012-09-18 | 2012-09-18 | G03TS01801C0 |  |  |  |  | 136.4d | 91.85d | Cost |  |  |  |  | G03TS01803C0 |  |  | GA | C |  | 03 | TS | SC | 018 | 03 | PP | BILL 6 | B06 | S1 | 03 | R00 |  | ACF07 | 018 |  |  |  |  |  |  |  |  |  |
|  | AF | **MEP Risers** |  | 2011-04-27 | 2012-06-09 |  |  |  |  |  |  |  |  |  |  |  |  |  |  |  |  |  |  |  |  |  |  |  |  |  |  |  |  |  |  |  |  |  |  |  |  |  |  |  |  |  |
|  | 03 | **MEP Risers** |  | 2011-04-27 | 2011-12-20 |  |  |  |  |  |  |  |  |  |  |  |  |  |  |  |  |  |  |  |  |  |  |  |  |  |  |  |  |  |  |  |  |  |  |  |  |  |  |  |  |  |
| GAFAF22019C0 |  | GA-AF ; Risers-Domestic cold water risers (All Floor) | 59d | 2011-04-27 A | 2011-12-18 | GAFAF22005C0 | 10% | 53.1d | 2011-06-21 | 2011-08-29 | 227.65d | 2.7d | PLUMBING [309.6 h]; Cost [15999.3 AED] | 15,999.3 | 1,599.93 | 1122 | 1515 | GAFAF22019C0 |  |  | GA | C |  | AF | AF | ME | 220 | 19 | PP | BILL 11 | B06 | S1 | RI | R00 | CP | ACF04 | 220 | 0 | 0 | 0 | 0 | 5 | 75 | RI | MEP |  |
| GAFAF22017C0 |  | GA-AF ; Risers-Storm water drainage risers (All Floor) | 59d | 2011-05-05 A | 2011-11-02 | GAFAF22013C0 | 60% | 23.6d | 2011-05-05 | 2011-07-14 | 260.75d | 35.8d | PLUMBING [2040 h]; Cost [105360 AED] | 105,360.48 | 63,216.29 | 1126 | 1519 | GAFAF22017C0 |  |  | GA | C |  | AF | AF | ME | 220 | 17 | PP | BILL 11 | B06 | S1 | RI | R00 | CP | ACF04 | 220 | 0 | 0 | 0 | 0 | 50 | 80 | RI | MEP | 6426.03 |
| GAFAF26043C0 |  | GA-AF ; Risers-Lightning protection cables (All Floor) | 59d | 2011-05-08 A | 2011-11-03 | G03S103399C0, G03S203399C0 | 50% | 29.5d | 2011-05-08 | 2011-07-17 | 260.25d | 35.3d | ELECTRICAL [10322.4 h]; Cost [563500 AED] | 563,500 | 281,750 | 1131 | 1524 | GAFAF26043C0 | 50 | 40 | GA | C |  | AF | AF | ME | 260 | 43 | PP | BILL 11 | B06 | S1 | MEL | R00 | CP | ACF04 | 260 |  |  |  |  | 40 | 90 | RI | MEP | 261537.6 |
| GAFAF21101C0 |  | GA-AF ; Risers-Secondary Steel for fire Suppression (All Floor) | 18d | 2011-05-15 A | 2011-10-10 | G03S105101C0, G03S205101C0 | 50% | 9d | 2011-05-31 | 2011-06-20 | 235.75d | 0d | Labor General [172.8 h]; Cost [51044 AED] | 51,044 | 25,522 | 1121 | 223 | GAFAF21101C0 |  |  | GA | C |  | AF | AF | ME | 211 | 01 | PP | BILL 11 | B06 | S1 | RI | R00 | CP | ACF04 | 211 | 0 | 0 | 0 | 0 | 5 | 80 | RI | MEP | 4440.82 |
| GAFAF21103C0 |  | GA-AF ; Risers-Fire Suppression risers (All Floor) | 180d | 2011-05-30 A | 2011-12-07 | GAFAF21101C0 | 75% | 45d | 2011-06-21 | 2012-01-26 | 235.75d | 10.8d | MECHANICAL [17200.8 h]; Cost [888166 AED] | 888,165.6 | 666,124.2 | 1121 | 1514 | GAFAF21103C0 | 75 | 55 | GA | C |  | AF | AF | ME | 211 | 03 | PP | BILL 11 | B06 | S1 | RI | R00 | CP | ACF04 | 211 |  |  |  |  | 5 | 65 | RI | MEP | 650135.69 |
| GAFAF22005C0 |  | GA-AF ; Risers-Secondary Steel for Domestic cold water risers (All Floor) | 18d | 2011-05-30 A | 2011-10-10 | G03S105101C0, G03S205101C0 | 50% | 9d | 2011-05-31 | 2011-06-20 | 227.65d | 0d | Labor General [172.8 h]; Cost [919.5 AED] | 919.5 | 459.75 | 1122 | 224 | GAFAF22005C0 | 50 | 25 | GA | C |  | AF | AF | ME | 220 | 05 | PP | BILL 11 | B06 | S1 | RI | R00 | CP | ACF04 | 220 | 0 | 0 | 0 | 0 | 5 | 65 | RI | MEP | 5.32 |
| GAFAF22007C0 |  | GA-AF ; Risers-Secondary Steel for Hot water risers (All Floor) | 18d | 2011-05-30 A | 2011-10-09 | G03S105101C0, G03S205101C0 | 60% | 7.2d | 2011-05-31 | 2011-06-20 | 258.95d | 0d | Labor General [172.8 h]; Cost [591.05 AED] | 591.05 | 354.63 | 1123 | 225 | GAFAF22007C0 |  |  | GA | C |  | AF | AF | ME | 220 | 07 | PP | BILL 11 | B06 | S1 | RI | R00 | CP | ACF04 | 220 | 0 | 0 | 0 | 0 | 5 | 60 | RI | MEP |  |
| GAFAF22011C0 |  | GA-AF ; Risers-Secondary Steel for Soil, waste & vent ris (All Floor) | 18d | 2011-05-30 A | 2011-10-06 | G03S105101C0, G03S205101C0 | 70% | 5.4d | 2011-05-31 | 2011-06-20 | 266.65d | 0d | Labor General [172.8 h]; Cost [36101 AED] | 36,101 | 25,270.7 | 1125 | 227 | GAFAF22011C0 |  |  | GA | C |  | AF | AF | ME | 220 | 11 | PP | BILL 11 | B06 | S1 | RI | R00 | CP | ACF04 | 220 | 0 | 0 | 0 | 0 | 5 | 60 | RI | MEP |  |
| GAFAF22013C0 |  | GA-AF ; Risers-Secondary Steel for Storm water drainage risers (All Floor) | 18d | 2011-05-30 A | 2011-10-06 | G03S105101C0, G03S205101C0 | 70% | 5.4d | 2011-05-31 | 2011-06-20 | 260.75d | 0d | Labor General [172.8 h]; Cost [6055.2 AED] | 6,055.2 | 4,238.64 | 1126 | 228 | GAFAF22013C0 |  |  | GA | C |  | AF | AF | ME | 220 | 13 | PP | BILL 11 | B06 | S1 | RI | R00 | CP | ACF04 | 220 | 0 | 0 | 0 | 0 | 5 | 60 | RI | MEP | 35.11 |
| GAFAF22021C0 |  | GA-AF ; Risers-Hot water risers (All Floor) | 59d | 2011-05-30 A | 2011-11-05 | GAFAF22007C0 | 60% | 23.6d | 2011-06-21 | 2011-08-29 | 258.95d | 34d | PLUMBING [199.2 h]; Cost [10284.3 AED] | 10,284.27 | 6,170.56 | 1123 | 1516 | GAFAF22021C0 | 60 | 30 | GA | C |  | AF | AF | ME | 220 | 21 | PP | BILL 11 | B06 | S1 | RI | R00 | CP | ACF04 | 220 | 0 | 0 | 0 | 0 | 5 | 90 | RI | MEP | 6902.08 |
| GAFAF22023C0 |  | GA-AF ; Risers-Soil, waste & vent risers (All Floor) | 59d | 2011-05-30 A | 2011-10-27 | GAFAF22011C0 | 70% | 17.7d | 2011-06-21 | 2011-08-29 | 266.65d | 41.7d | PLUMBING [12156 h]; Cost [628157 AED] | 628,157.4 | 439,710.18 | 1125 | 1518 | GAFAF22023C0 | 45 | 20 | GA | C |  | AF | AF | ME | 220 | 23 | PP | BILL 11 | B06 | S1 | RI | R00 | CP | ACF04 | 220 | 0 | 0 | 0 | 0 | 5 | 75 | RI | MEP | 38289.82 |
| GAFAF23027C0 |  | GA-AF ; Risers-Secondary Steel for Chilled water & heat recovery pip (All Floor) | 180d | 2011-05-30 A | 2011-11-14 | G03S105101C0, G03S205101C0 | 80% | 36d | 2011-05-31 | 2012-01-05 | 200.95d | 0d | Labor General [172.8 h]; Cost [132654 AED] | 132,654.45 | 106,123.56 | 1128 | 230 | GAFAF23027C0 | 80 | 60 | GA | C |  | AF | AF | ME | 230 | 27 | PP | BILL 11 | B06 | S1 | RI | R00 | CP | ACF04 | 230 | 0 | 0 | 0 | 0 | 50 | 90 | RI | MEP | 4616.36 |
| GAFAF23029C0 |  | GA-AF ; Risers-Chilled water & heat recovery pip (All Floor) | 192d | 2011-05-30 A | 2011-12-20 | GAFAF23027C0 | 85% | 28.8d | 2011-06-21 | 2012-02-11 | 200.95d | 0d | MECHANICAL [44701.2 h]; Cost [2308187 AED] | 2,308,187.43 | 1,961,959.32 | 1128 | 1521 | GAFAF23029C0 | 85 | 65 | GA | C |  | AF | AF | ME | 230 | 29 | PP | BILL 11 | B06 | S1 | RI | R00 | CP | ACF04 | 230 | 0 | 0 | 0 | 0 | 50 | 85 | RI | MEP | 563196.22 |
| GAFAF26035C0 |  | GA-AF ; Risers-Tray for Low voltage cables (power, comm, (All Floor) | 59d | 2011-05-30 A | 2011-11-17 | G03S105101C0, G03S205101C0 | 35% | 38.35d | 2011-05-31 | 2011-08-08 | 247.75d | 0d | ELECTRICAL [1273.2 h]; Cost [70479.4 AED] | 70,479.36 | 24,667.78 | 1130 | 232 | GAFAF26035C0 | 35 | 30 | GA | C |  | AF | AF | ME | 260 | 35 | PP | BILL 11 | B06 | S1 | MEL | R00 | CP | ACF04 | 260 |  |  |  |  | 5 | 40 | RI | MEP | 28186.95 |
| GAFAF26037C0 |  | GA-AF ; Risers-Tray for ELV risers (All Floor) | 59d | 2011-05-30 A | 2011-12-04 | G03S105101C0, G03S205101C0 | 15% | 50.15d | 2011-05-31 | 2011-08-08 | 247.75d | 22.8d | ELECTRICAL [1062 h]; Cost [57264.5 AED] | 57,264.48 | 8,589.67 | 1132 | 233 | GAFAF26037C0 | 15 | 5 | GA | C |  | AF | AF | ME | 260 | 37 | PP | BILL 11 | B06 | S1 | MEL | R00 | CP | ACF04 | 260 |  |  |  |  | 5 | 10 | RI | MEP |  |
| GAFAF23025C0 |  | GA-AF ; Risers-Secondary Steel for Main Ducts (All Floor) | 179d | 2011-07-10 A | 2011-10-01 | G03S105101C0, G03S205101C0 | 100% | 0d | 2011-06-30 | 2012-02-02 | 269.95d | 0d | Cost [62773.2 AED] | 62,773.2 | 50,218.56 | 1127 | 229 | GAFAF23025C0 | 80 | 25 | GA | C |  | AF | AF | ME | 230 | 25 | PP | BILL 11 | B06 | S1 | RI | R00 | CP | ACF04 | 230 |  |  |  |  |  | 80 | RI | MEP |  |
| GAFAF23031C0 |  | GA-AF ; Risers-Risers - Main Ducts (All Floor) | 66d | 2011-07-10 A | 2011-10-23 | GAFAF23025C0 | 70% | 19.8d | 2011-07-21 | 2011-10-08 | 269.95d | 45d | MECHANICAL [21159.6 h]; Cost [1092254 AED] | 1,092,253.68 | 764,577.58 | 1127 | 1520 | GAFAF23031C0 | 45 | 30 | GA | C |  | AF | AF | ME | 230 | 31 | PP | BILL 11 | B06 | S1 | RI | R00 | CP | ACF04 | 230 | 0 | 0 | 0 | 0 |  | 50 | RI | MEP |  |
| GAFAF26033C0 |  | GA-AF ; Risers-Tray for High voltage cables (All Floor) | 200d | 2011-07-10 A | 2011-10-11 | G03S105101C0, G03S205101C0 | 95% | 10d | 2011-06-30 | 2012-02-28 | 246.65d | 0d | ELECTRICAL [1698 h]; Cost [92504.2 AED] | 92,504.16 | 87,878.95 | 1129 | 231 | GAFAF26033C0 | 95 | 50 | GA | C |  | AF | AF | ME | 260 | 33 | PP | BILL 11 | B06 | S1 | MEL | R00 | CP | ACF04 | 260 |  |  |  |  |  | 80 | RI | MEP |  |
| GAFAF26039C0 |  | GA-AF ; Risers-High voltage cables (All Floor) | 200d | 2011-07-10 A | 2011-10-23 | GAFAF26033C0 | 95% | 10d | 2011-09-11 | 2012-05-08 | 246.65d | 26.18d | ELECTRICAL [4914 h]; Cost [276077 AED] | 276,077.46 | 262,273.59 | 1129 | 1522 | GAFAF26039C0 | 95 | 70 | GA | C |  | AF | AF | ME | 260 | 39 | PP | BILL 11 | B06 | S1 | MEL | R00 | CP | ACF04 | 260 |  |  |  |  |  | 40 | RI | MEP | 62665.55 |
| GAFAF26045C0 |  | GA-AF ; Risers-Low voltage cables (power, comm, security) (All Floor) | 42d | 2011-10-01 | 2011-11-21 | GAFAF26035C0 SS |  |  |  |  | 247.75d | 22.8d | ELECTRICAL [2865.6 h]; Cost |  |  | 1130 | 1523 | GAFAF26045C0 |  |  | GA | C |  | AF | AF | ME | 260 | 45 | PP | BILL 11 | B06 | S1 | MEL | R00 |  | ACF04 | 260 |  |  |  |  |  | 45 | RI | MEP | 8971.35 |
| GAFAF26041C0 |  | GA-AF ; Risers-ELV Cables (All Floor) | 42d | 2011-10-26 | 2011-12-20 | GAFAF21103C0 FF, GAFAF22017C0 FF, GAFAF22019C0 FF, GAFAF22021C0 FF, GAFAF22023C0 FF, GAFAF23029C0 FF, GAFAF23031C0 FF, GAFAF26037C0 SS, GAFAF26043C0 FF |  |  |  |  | 224.95d | 0d | ELECTRICAL [3859.2 h]; Cost |  |  | 1132 | 1525 | GAFAF26041C0 |  |  | GA | C |  | AF | AF | ME | 260 | 41 | PP | BILL 11 | B06 | S1 | MEL | R00 |  | ACF04 | 260 |  |  |  |  |  | 40 | RI | MEP | 97771.6 |

| ID | WBS | Activity | Duration | Start | Finish | Predecessors | Total float | Free float | Resources | change id | CCAD BUILDING(SET) | CCAD PHASE(SET) | CCAD FLOOR(SET) | CCAD ZONE(SET) | CCAD WORK(SET) | CCAD SECTION(SET) | CCAD SERIAL No.(SET) | CCAD RESPONSIBILITY(SET) | CCAD CBS(SET) | CCAD BILL(SET) | CCAD HANDOVER(SET) | CCAD TAG(SET) | CCAD REV(SET) | CCADACF (SET) | CCAD SSCF | Change Order # | NEW ACTIVITY ID | CCAD CSA |
| --- | --- | --- | --- | --- | --- | --- | --- | --- | --- | --- | --- | --- | --- | --- | --- | --- | --- | --- | --- | --- | --- | --- | --- | --- | --- | --- | --- | --- |
|  | 10 | **Precommissioning Tesing & snagging** |  | 2011-12-20 | 2012-06-09 |  |  |  |  |  |  |  |  |  |  |  |  |  |  |  |  |  |  |  |  |  |  |  |
| GAFTS01802C0 |  | GA-AF ; MEP de-snag, FIREM sign-off | 12d | 2011-12-20 | 2012-01-04 | GAFAF26039C0, GAFAF26041C0, GAFAF26045C0 | 335.2d | 114.33d | TESTING & COMMISSIONING [1020 h]; Cost | GAFTS01802C0 | GA | C | AF | TS | SC | 018 | 02 | PP | BILL 11 | B06 | S1 | 01 | R00 | ACF07 | 018 |  |  |  |
| GAFTS01801C0 |  | GA-AF ; Touch-up & Clean / JV inspection /CIR /De-snag | 18d | 2012-05-19 | 2012-06-09 | GAFAF26039C0, GAFAF26041C0, GAFAF26045C0, GAFTS01802C0, GVT4614247C0, GVT4914247C0, GVT5014247C0, GVT5314247C0 | 220.88d | 0d | TESTING & COMMISSIONING [170 h]; Cost | GAFTS01801C0 | GA | C | AF | TS | SC | 018 | 01 | PP | BILL 11 | B06 | S1 | 02 | R00 | ACF07 | 018 |  |  |  |
| GAFTS01803C0 |  | GA-AF ; Consultant's final de-snag inspection | 0d | 2012-06-09 | 2012-06-09 | GAFTS01801C0 | 220.88d | 192.88d | Cost | GAFTS01803C0 | GA | C | AF | TS | SC | 018 | 03 | PP | BILL 11 | B06 | S1 | 03 | R00 | ACF07 | 018 |  |  |  |
|  | VT | **Vertical Transpotation** |  | 2011-08-10 | 2013-01-29 |  |  |  |  |  |  |  |  |  |  |  |  |  |  |  |  |  |  |  |  |  |  |  |
|  | EL46 | **Lift (#46~48,61)** |  | 2012-02-01 | 2012-05-19 |  |  |  |  |  |  |  |  |  |  |  |  |  |  |  |  |  |  |  |  |  |  |  |
| GVT4614203C0 |  | GA-AF ; Ele(#46,47,48,61)-Fixing template, Plumbing (Lift) | 4d | 2012-02-01 | 2012-02-06 | G03S103399C0, G03S203399C0, GNHE08101C10 FS+153d | 78.88d | 0d | SERVICE LIFTS [22 h]; Cost | CVT4614203C0 | GA | C | VT | 46 | EL | 142 | 03 |  | BILL 11 | B11 | S1 | 06 | R00 | ACF11 | 142 | 1102 | 1428 | LE |
| GVT4614205C0 |  | GA-AF ; Ele(#46,47,48,61)-Install first rails (Lift) | 2d | 2012-02-07 | 2012-02-08 | GVT4614203C0 | 78.88d | 0d | SERVICE LIFTS [37 h]; Cost | CVT4614205C0 | GA | C | VT | 46 | EL | 142 | 05 |  | BILL 11 | B11 | S1 | 06 | R00 | ACF11 | 142 | 1103 | 1429 | LE |
| GVT4614207C0 |  | GA-AF ; Ele(#46,47,48,61)-Build false car (Lift) | 3d | 2012-02-09 | 2012-02-12 | GVT4614205C0 | 78.88d | 0d | SERVICE LIFTS [52 h]; Cost | CVT4614207C0 | GA | C | VT | 46 | EL | 142 | 07 |  | BILL 11 | B11 | S1 | 06 | R00 | ACF11 | 142 | 1104 | 1430 | LE |
| GVT4614209C0 |  | GA-AF ; Ele(#46,47,48,61)-Install brackets, rails (Lift) | 7d | 2012-02-13 | 2012-02-20 | GVT4614207C0 | 78.88d | 0d | SERVICE LIFTS [681 h]; Cost | CVT4614209C0 | GA | C | VT | 46 | EL | 142 | 09 |  | BILL 11 | B11 | S1 | 06 | R00 | ACF11 | 142 | 1105 | 1431 | LE |
| GVT4614211C0 |  | GA-AF ; Ele(#46,47,48,61)-Install Entrance frames (Lift) | 8d | 2012-02-21 | 2012-02-29 | GVT4614209C0 | 78.88d | 0d | SERVICE LIFTS [516 h]; Cost | CVT4614211C0 | GA | C | VT | 46 | EL | 142 | 11 |  | BILL 11 | B11 | S1 | 06 | R00 | ACF11 | 142 | 1106 | 1432 | LE |
| GVT4614213C0 |  | GA-AF ; Ele(#46,47,48,61)-Install Machine & Controller (Lift) | 5d | 2012-03-01 | 2012-03-06 | GVT4614211C0 | 78.88d | 0d | SERVICE LIFTS [726 h]; Cost | CVT4614213C0 | GA | C | VT | 46 | EL | 142 | 13 |  | BILL 11 | B11 | S1 | 06 | R00 | ACF11 | 142 | 1107 | 1433 | LE |
| GVT4614215C0 |  | GA-AF ; Ele(#46,47,48,61)-Install Governor & rope (Lift) | 2d | 2012-03-07 | 2012-03-08 | GVT4614213C0 | 78.88d | 0d | SERVICE LIFTS [135 h]; Cost | CVT4614215C0 | GA | C | VT | 46 | EL | 142 | 15 |  | BILL 11 | B11 | S1 | 06 | R00 | ACF11 | 142 | 1108 | 1434 | LE |
| GVT4614217C0 |  | GA-AF ; Ele(#46,47,48,61)-Install counterweight frame (Lift) | 3d | 2012-03-10 | 2012-03-12 | GVT4614215C0 | 78.88d | 0d | SERVICE LIFTS [135 h]; Cost | CVT4614217C0 | GA | C | VT | 46 | EL | 142 | 17 |  | BILL 11 | B11 | S1 | 06 | R00 | ACF11 | 142 | 1109 | 1435 | LE |
| GVT4614219C0 |  | GA-AF ; Ele(#46,47,48,61)-Hoistway truncking & Wiring (Lift) | 7d | 2012-03-13 | 2012-03-20 | GVT4614217C0 | 78.88d | 0d | SERVICE LIFTS [172 h]; Cost | CVT4614219C0 | GA | C | VT | 46 | EL | 142 | 19 |  | BILL 11 | B11 | S1 | 06 | R00 | ACF11 | 142 | 1110 | 1436 | LE |
| GVT4614221C0 |  | GA-AF ; Ele(#46,47,48,61)-Machine room wiring (Lift) | 5d | 2012-03-21 | 2012-03-26 | GVT4614219C0 | 78.88d | 0d | SERVICE LIFTS [37 h]; Cost | CVT4614221C0 | GA | C | VT | 46 | EL | 142 | 21 |  | BILL 11 | B11 | S1 | 06 | R00 | ACF11 | 142 | 1111 | 1437 | LE |
| GVT4614223C0 |  | GA-AF ; Ele(#46,47,48,61)-Build car frame (Lift) | 3d | 2012-03-27 | 2012-03-29 | GVT4614221C0 | 78.88d | 0d | SERVICE LIFTS [277 h]; Cost | CVT4614223C0 | GA | C | VT | 46 | EL | 142 | 23 |  | BILL 11 | B11 | S1 | 06 | R00 | ACF11 | 142 | 1112 | 1438 | LE |
| GVT4614225C0 |  | GA-AF ; Ele(#46,47,48,61)-Main roping (Lift) | 3d | 2012-03-31 | 2012-04-02 | GVT4614223C0 | 78.88d | 0d | SERVICE LIFTS [135 h]; Cost | CVT4614225C0 | GA | C | VT | 46 | EL | 142 | 25 |  | BILL 11 | B11 | S1 | 06 | R00 | ACF11 | 142 | 1113 | 8080 | LE |
| GVT4614227C0 |  | GA-AF ; Ele(#46,47,48,61)-Loading counterweights (Lift) | 3d | 2012-04-03 | 2012-04-05 | GVT4614225C0 | 78.88d | 0d | SERVICE LIFTS [37 h]; Cost | CVT4614227C0 | GA | C | VT | 46 | EL | 142 | 27 |  | BILL 11 | B11 | S1 | 06 | R00 | ACF11 | 142 | 1114 | 1440 | LE |
| GVT4614229C0 |  | GA-AF ; Ele(#46,47,48,61)-Dismantling false car (Lift) | 3d | 2012-04-07 | 2012-04-09 | GVT4614227C0 | 78.88d | 0d | SERVICE LIFTS [15 h]; Cost | CVT4614229C0 | GA | C | VT | 46 | EL | 142 | 29 |  | BILL 11 | B11 | S1 | 06 | R00 | ACF11 | 142 | 1115 | 8090 | LE |
| GVT4614231C0 |  | GA-AF ; Ele(#46,47,48,61)-Build cab & Wiring (Lift) | 12d | 2012-04-10 | 2012-04-23 | GVT4614229C0 | 78.88d | 0d | SERVICE LIFTS [254 h]; Cost | CVT4614231C0 | GA | C | VT | 46 | EL | 142 | 31 |  | BILL 11 | B11 | S1 | 06 | R00 | ACF11 | 142 | 1116 | 8100 | LE |
| GVT4614253C0 |  | GA-AF ; Ele(#46,47,48,61)-Permanent power supply (Lift) | 0.12d | 2012-04-24 | 2012-04-24 | GVT4614231C0 | 78.88d | 0d | SERVICE LIFTS [0.5 h]; Cost | CVT4614253C0 | GA | C | VT | 46 | EL | 142 | 53 |  | BILL 11 | B11 | S1 | 06 | R00 | ACF11 | 142 | 1117 | 1443 | LE |
| GVT4614241C0 |  | GA-AF ; Ele(#46,47,48,61)-Adjusting (Lift) | 15d | 2012-04-24 | 2012-05-12 | GVT4614253C0 | 78.88d | 0d | SERVICE LIFTS [82 h]; Cost | CVT4614241C0 | GA | C | VT | 46 | EL | 142 | 41 |  | BILL 11 | B11 | S1 | 06 | R00 | ACF11 | 142 |  | 1530 | LE |
| GVT4614247C0 |  | GA-AF ; Ele(#46,47,48,61)-Inspection, Testing & Commis (Lift) | 6d | 2012-05-12 | 2012-05-19 | GVT4614241C0 | 78.88d | 0d | SERVICE LIFTS [105 h]; Cost | CVT4614247C0 | GA | C | VT | 46 | EL | 142 | 47 |  | BILL 11 | B11 | S1 | 06 | R00 | ACF11 | 142 |  | 1529 | LE |

| ID | WBS | Activity | Duration | Start | Finish | Predecessors | Complete | Remaining | Planned start | Planned finish | Total float | Free float | Constraint | Resources | change id | No.of Wor Days | Duration/Differe | CCAD BUILDING(SET) | CCAD PHASE(SET) | CCAD FLOOR(SET) | CCAD ZONE(SET) | CCAD WORK(SET) | CCAD SECTION(SET) | CCAD SERIAL No.(SET) | CCAD CBS(SET) | CCAD BILL(SET) | CCAD HANDOVER(SET) | CCAD TAG(SET) | CCAD REV(SET) | CCADACF (SET) | CCAD CSA | CCAD SSCF | user_end_date3 | user_end_date4 | user_text4 | NEW ACTIVITY ID | P_811 | P_711 | U% | CCAD (VO) |
| --- | --- | --- | --- | --- | --- | --- | --- | --- | --- | --- | --- | --- | --- | --- | --- | --- | --- | --- | --- | --- | --- | --- | --- | --- | --- | --- | --- | --- | --- | --- | --- | --- | --- | --- | --- | --- | --- | --- | --- | --- |
|  | EL49 | **Lift (#49)** |  | 2011-10-05 | 2013-01-29 |  |  |  |  |  |  |  |  |  |  |  |  |  |  |  |  |  |  |  |  |  |  |  |  |  |  |  |  |  |  |  |  |  |  |  |
| GVT4914203C0 |  | GA-AF ; Ele(#49)- Fixing template, Plumbing (Lift) | 4d | 2011-10-05 | 2011-10-09 | G03S103399C0, G03S203399C0, GNHE08101C10 FS+34d |  |  |  |  | 170d | 0d |  | SERVICE LIFTS [7 h]; Cost | GVT4914203C0 | 123044096 | 117440512 | GA | C | VT | 49 | EL | 142 | 03 | BILL 11 | B11 | S1 | 05 | R00 | ACF11 | LE | 142 |  |  |  |  |  |  |  |  |
| GVT4914205C0 |  | GA-AF ; Ele(#49)- Install first rails (Lift) | 2d | 2011-10-10 | 2011-10-11 | GVT4914203C0 |  |  |  |  | 170d | 0d |  | SERVICE LIFTS [7 h]; Cost | GVT4914205C0 | 125058816 |  | GA | C | VT | 49 | EL | 142 | 05 | BILL 11 | B11 | S1 | 05 | R00 | ACF11 | LE | 142 |  |  |  |  |  |  |  |  |
| GVT4914207C0 |  | GA-AF ; Ele(#49)- Build false car (Lift) | 3d | 2011-10-12 | 2011-10-15 | GVT4914205C0 |  |  |  |  | 170d | 0d |  | SERVICE LIFTS [7 h]; Cost | GVT4914207C0 | 123044096 | 1593835520 | GA | C | VT | 49 | EL | 142 | 07 | BILL 11 | B11 | S1 | 05 | R00 | ACF11 | LE | 142 |  |  |  |  |  |  |  |  |
| GVT4914209C0 |  | GA-AF ; Ele(#49)- Install brackets, rails & alignment (Lift) | 5d | 2011-10-16 | 2011-10-20 | GVT4914207C0 |  |  |  |  | 170d | 0d |  | SERVICE LIFTS [105 h]; Cost | GVT4914209C0 | 123044096 |  | GA | C | VT | 49 | EL | 142 | 09 | BILL 11 | B11 | S1 | 05 | R00 | ACF11 | LE | 142 |  |  |  |  |  |  |  |  |
| GVT4914211C0 |  | GA-AF ; Ele(#49)- Install Entrance frames & doors (Lift) | 4d | 2011-10-22 | 2011-10-25 | GVT4914209C0 |  |  |  |  | 170d | 0d |  | SERVICE LIFTS [75 h]; Cost | GVT4914211C0 |  |  | GA | C | VT | 49 | EL | 142 | 11 | BILL 11 | B11 | S1 | 05 | R00 | ACF11 | LE | 142 |  |  |  |  |  |  |  |  |
| GVT4914213C0 |  | GA-AF ; Ele(#49)- Install Machine & Controller (Lift) | 5d | 2011-10-26 | 2011-10-31 | GVT4914211C0 |  |  |  |  | 170d | 0d |  | SERVICE LIFTS [112 h]; Cost | GVT4914213C0 | 123044096 |  | GA | C | VT | 49 | EL | 142 | 13 | BILL 11 | B11 | S1 | 05 | R00 | ACF11 | LE | 142 |  |  |  |  |  |  |  |  |
| GVT4914215C0 |  | GA-AF ; Ele(#49)- Install Governor & rope (Lift) | 2d | 2011-11-01 | 2011-11-02 | GVT4914213C0 |  |  |  |  | 170d | 0d |  | SERVICE LIFTS [22 h]; Cost | GVT4914215C0 |  |  | GA | C | VT | 49 | EL | 142 | 15 | BILL 11 | B11 | S1 | 05 | R00 | ACF11 | LE | 142 |  |  |  |  |  |  |  |  |
| GVT4914217C0 |  | GA-AF ; Ele(#49)- Install counterweight frame (Lift) | 3d | 2011-11-03 | 2011-11-09 | GVT4914215C0 |  |  |  |  | 170d | 0d |  | SERVICE LIFTS [22 h]; Cost | GVT4914217C0 | 123044096 |  | GA | C | VT | 49 | EL | 142 | 17 | BILL 11 | B11 | S1 | 05 | R00 | ACF11 | LE | 142 | 2011-07-26 |  |  |  |  |  |  |  |
| GVT4914219C0 |  | GA-AF ; Ele(#49)- Hoistway truncking & Wiring (Lift) | 7d | 2011-11-10 | 2011-11-17 | GVT4914217C0 |  |  |  |  | 170d | 0d |  | SERVICE LIFTS [22 h]; Cost | GVT4914219C0 |  |  | GA | C | VT | 49 | EL | 142 | 19 | BILL 11 | B11 | S1 | 05 | R00 | ACF11 | LE | 142 | 2011-07-26 | 2011-07-29 | 100 |  |  |  |  |  |
| GVT4914221C0 |  | GA-AF ; Ele(#49)- Machine room wiring (Lift) | 5d | 2011-11-19 | 2011-11-23 | GVT4914219C0 |  |  |  |  | 170d | 0d |  | SERVICE LIFTS [7 h]; Cost | GVT4914221C0 |  | -16777216 | GA | C | VT | 49 | EL | 142 | 21 | BILL 11 | B11 | S1 | 05 | R00 | ACF11 | LE | 142 | 2011-07-30 | 2011-07-31 |  |  |  |  |  |  |
| GVT4914223C0 |  | GA-AF ; Ele(#49)- Build car frame (Lift) | 3d | 2011-11-24 | 2011-11-28 | GVT4914221C0 |  |  |  |  | 170d | 0d |  | SERVICE LIFTS [45 h]; Cost | GVT4914223C0 | 125058816 | 117440512 | GA | C | VT | 49 | EL | 142 | 23 | BILL 11 | B11 | S1 | 05 | R00 | ACF11 | LE | 142 | 2011-08-01 | 2011-08-03 |  |  |  |  |  |  |
| GVT4914225C0 |  | GA-AF ; Ele(#49)- Main roping (Lift) | 3d | 2011-11-29 | 2011-12-01 | GVT4914223C0 |  |  |  |  | 170d | 0d |  | SERVICE LIFTS [22 h]; Cost | GVT4914225C0 | 125058816 |  | GA | C | VT | 49 | EL | 142 | 25 | BILL 11 | B11 | S1 | 05 | R00 | ACF11 | LE | 142 | 2011-08-04 | 2011-08-08 |  |  |  |  |  |  |
| GVT4914227C0 |  | GA-AF ; Ele(#49)- Loading counterweights (Lift) | 3d | 2011-12-04 | 2011-12-06 | GVT4914225C0 |  |  |  |  | 170d | 0d |  | SERVICE LIFTS [7 h]; Cost | GVT4914227C0 | 123044096 | 117440512 | GA | C | VT | 49 | EL | 142 | 27 | BILL 11 | B11 | S1 | 05 | R00 | ACF11 | LE | 142 | 2011-08-27 | 2011-08-30 |  |  |  |  |  |  |
| GVT4914229C0 |  | GA-AF ; Ele(#49)- Dismantling false car (Lift) | 1d | 2011-12-07 | 2011-12-07 | GVT4914227C0 |  |  |  |  | 170d | 0d |  | SERVICE LIFTS [0.5 h]; Cost | GVT4914229C0 | 123044096 |  | GA | C | VT | 49 | EL | 142 | 29 | BILL 11 | B11 | S1 | 05 | R00 | ACF11 | LE | 142 | 2011-08-31 | 2011-09-04 |  |  |  |  |  |  |
| GVT4914231C0 |  | GA-AF ; Ele(#49)- Build cab & Wiring (Lift) | 10d | 2011-12-08 | 2011-12-19 | GVT4914223C0, GVT4914229C0 |  |  |  |  | 170d | 0d |  | SERVICE LIFTS [37 h]; Cost | GVT4914231C0 | 125058816 |  | GA | C | VT | 49 | EL | 142 | 31 | BILL 11 | B11 | S1 | 05 | R00 | ACF11 | LE | 142 | 2011-09-05 | 2011-09-06 |  |  |  |  |  |  |
| GVT4914247C0 |  | GA-AF ; Ele(#49)- Inspection, Testing & Commis (Lift) | 6d | 2011-12-20 | 2011-12-26 | GVT4914231C0 |  |  |  |  | 170d | 121.12d |  | SERVICE LIFTS [30 h]; Cost | CVT3914247C0 |  |  | GA | C | VT | 49 | EL | 142 | 47 | BILL 11 | B11 | S1 | 05 | R00 | ACF11 | LE | 142 |  |  |  | 1531 |  |  |  |  |
| GVT4914248C0 |  | GA-AF ; Ele(#49)- Refurbishment | 28d | 2012-12-26 | 2013-01-29 | GVT4914247C0 |  |  |  |  | 28d | 0d | as late as possible | Labor General; Cost | CVT3914247C0 |  |  | GA | C | VT | 49 | EL | 142 | 47 | BILL 11 | B11 | S1 | 05 | R00 | ACF11 |  | 142 |  |  |  | 1531 |  |  |  |  |
|  | EL50 | **Lift (#50~52)** |  | 2011-08-10 | 2013-01-29 |  |  |  |  |  |  |  |  |  |  |  |  |  |  |  |  |  |  |  |  |  |  |  |  |  |  |  |  |  |  |  |  |  |  |  |
| GVT5014203C0 |  | GA-AF ; Ele(#50~52)- Fixing template, Plumbing (Lift) | 4d | 2011-08-10 A | 2011-10-20 | G03S103399C0, G03S203399C0, GNHE08101C10 FS+49d | 75% | 1d | 2011-09-07 | 2011-09-12 | 157.13d | 0d |  | SERVICE LIFTS [15 h]; Cost | GVT5014203C0 | 125058816 | -16777216 | GA | C | VT | 50 | EL | 142 | 03 | BILL 11 | B11 | S1 | 04 | R00 | ACF11 | LE | 142 |  |  |  |  | 75 | 0 | 75 | CP |
| GVT5014205C0 |  | GA-AF ; Ele(#50~52)- Install first rails (Lift) | 2d | 2011-10-22 | 2011-10-23 | GVT5014203C0 |  |  |  |  | 157.13d | 0d |  | SERVICE LIFTS [22 h]; Cost | GVT5014205C0 | 125058816 | 117440512 | GA | C | VT | 50 | EL | 142 | 05 | BILL 11 | B11 | S1 | 04 | R00 | ACF11 | LE | 142 |  |  |  |  |  |  | 0 |  |
| GVT5014207C0 |  | GA-AF ; Ele(#50~52)- Build false car (Lift) | 3d | 2011-10-24 | 2011-10-26 | GVT5014205C0 |  |  |  |  | 157.13d | 0d |  | SERVICE LIFTS [30 h]; Cost | GVT5014207C0 | 125058816 | 268435456 | GA | C | VT | 50 | EL | 142 | 07 | BILL 11 | B11 | S1 | 04 | R00 | ACF11 | LE | 142 |  |  |  |  |  |  |  |  |
| GVT5014209C0 |  | GA-AF ; Ele(#50~52)- Install brackets, rails & alignment (Lift) | 5d | 2011-10-27 | 2011-11-01 | GVT5014207C0 |  |  |  |  | 157.13d | 0d |  | SERVICE LIFTS [389 h]; Cost | GVT5014209C0 | 125058816 | 117440512 | GA | C | VT | 50 | EL | 142 | 09 | BILL 11 | B11 | S1 | 04 | R00 | ACF11 | LE | 142 |  |  |  |  |  |  |  |  |
| GVT5014211C0 |  | GA-AF ; Ele(#50~52)- Install Entrance frames & doors (Lift) | 5d | 2011-11-02 | 2011-11-10 | GVT5014209C0 |  |  |  |  | 157.13d | 0d |  | SERVICE LIFTS [292 h]; Cost | GVT5014211C0 |  | 117440512 | GA | C | VT | 50 | EL | 142 | 11 | BILL 11 | B11 | S1 | 04 | R00 | ACF11 | LE | 142 |  |  |  |  |  |  |  |  |
| GVT5014213C0 |  | GA-AF ; Ele(#50~52)- Install Machine & Controller (Lift) | 5d | 2011-11-12 | 2011-11-16 | GVT5014211C0 |  |  |  |  | 157.13d | 0d |  | SERVICE LIFTS [419 h]; Cost | GVT5014213C0 |  |  | GA | C | VT | 50 | EL | 142 | 13 | BILL 11 | B11 | S1 | 04 | R00 | ACF11 | LE | 142 |  |  |  |  |  |  |  |  |
| GVT5014215C0 |  | GA-AF ; Ele(#50~52)- Install Governor & rope (Lift) | 2d | 2011-11-17 | 2011-11-19 | GVT5014213C0 |  |  |  |  | 157.13d | 0d |  | SERVICE LIFTS [75 h]; Cost | GVT5014215C0 | -256 | 117440512 | GA | C | VT | 50 | EL | 142 | 15 | BILL 11 | B11 | S1 | 04 | R00 | ACF11 | LE | 142 |  |  |  |  |  |  |  |  |
| GVT5014217C0 |  | GA-AF ; Ele(#50~52)- Install counterweight frame (Lift) | 3d | 2011-11-20 | 2011-11-22 | GVT5014215C0 |  |  |  |  | 157.13d | 0d |  | SERVICE LIFTS [75 h]; Cost | GVT5014217C0 | 125058816 | 117440512 | GA | C | VT | 50 | EL | 142 | 17 | BILL 11 | B11 | S1 | 04 | R00 | ACF11 | LE | 142 | 2011-07-26 |  |  |  |  |  |  |  |
| GVT5014219C0 |  | GA-AF ; Ele(#50~52)- Hoistway truncking & Wiring (Lift) | 7d | 2011-11-23 | 2011-12-01 | GVT5014217C0 |  |  |  |  | 157.13d | 0d |  | SERVICE LIFTS [97 h]; Cost | GVT5014219C0 |  |  | GA | C | VT | 50 | EL | 142 | 19 | BILL 11 | B11 | S1 | 04 | R00 | ACF11 | LE | 142 | 2011-07-26 | 2011-07-29 | 100 |  |  |  |  |  |
| GVT5014221C0 |  | GA-AF ; Ele(#50~52)- Machine room wiring (Lift) | 5d | 2011-12-04 | 2011-12-08 | GVT5014219C0 |  |  |  |  | 157.13d | 0d |  | SERVICE LIFTS [22 h]; Cost | GVT5014221C0 | 125058816 | 117440512 | GA | C | VT | 50 | EL | 142 | 21 | BILL 11 | B11 | S1 | 04 | R00 | ACF11 | LE | 142 | 2011-07-30 | 2011-07-31 |  |  |  |  |  |  |
| GVT5014223C0 |  | GA-AF ; Ele(#50~52)- Build car frame (Lift) | 3d | 2011-12-10 | 2011-12-12 | GVT5014221C0 |  |  |  |  | 157.13d | 0d |  | SERVICE LIFTS [157 h]; Cost | GVT5014223C0 | -256 | 117440512 | GA | C | VT | 50 | EL | 142 | 23 | BILL 11 | B11 | S1 | 04 | R00 | ACF11 | LE | 142 | 2011-08-01 | 2011-08-03 |  |  |  |  |  |  |
| GVT5014225C0 |  | GA-AF ; Ele(#50~52)- Main roping (Lift) | 3d | 2011-12-13 | 2011-12-15 | GVT5014223C0 |  |  |  |  | 157.13d | 0d |  | SERVICE LIFTS [75 h]; Cost | GVT5014225C0 | 125058816 | -16777216 | GA | C | VT | 50 | EL | 142 | 25 | BILL 11 | B11 | S1 | 04 | R00 | ACF11 | LE | 142 | 2011-08-04 | 2011-08-08 |  |  |  |  |  |  |
| GVT5014227C0 |  | GA-AF ; Ele(#50~52)- Loading counterweights (Lift) | 3d | 2011-12-17 | 2011-12-19 | GVT5014225C0 |  |  |  |  | 157.13d | 0d |  | SERVICE LIFTS [22 h]; Cost | GVT5014227C0 |  | 117440512 | GA | C | VT | 50 | EL | 142 | 27 | BILL 11 | B11 | S1 | 04 | R00 | ACF11 | LE | 142 | 2011-08-24 | 2011-08-28 |  |  |  |  |  |  |
| GVT5014229C0 |  | GA-AF ; Ele(#50~52)- Dismantling false car (Lift) | 3d | 2011-12-20 | 2011-12-22 | GVT5014227C0 |  |  |  |  | 157.13d | 0d |  | SERVICE LIFTS [7 h]; Cost | GVT5014229C0 |  |  | GA | C | VT | 50 | EL | 142 | 29 | BILL 11 | B11 | S1 | 04 | R00 | ACF11 | LE | 142 | 2011-08-29 | 2011-09-02 |  |  |  |  |  |  |
| GVT5014231C0 |  | GA-AF ; Ele(#50~52)- Build cab & Wiring (Lift) | 9.88d | 2011-12-24 | 2012-01-04 | GVT5014223C0, GVT5014229C0 |  |  |  |  | 157.13d | 0d |  | SERVICE LIFTS [150 h]; Cost | GVT5014231C0 |  |  | GA | C | VT | 50 | EL | 142 | 31 | BILL 11 | B11 | S1 | 04 | R00 | ACF11 | LE | 142 | 2011-09-03 | 2011-09-04 |  |  |  |  |  |  |
| GVT5014247C0 |  | GA-AF ; Ele(#50~52)- Inspection, Testing & Commis (Lift) | 6d | 2012-01-04 | 2012-01-11 | GVT5014231C0 |  |  |  |  | 157.13d | 108.25d |  | SERVICE LIFTS [105 h]; Cost | CVT3914247C0 |  |  | GA | C | VT | 50 | EL | 142 | 47 | BILL 11 | B11 | S1 | 04 | R00 | ACF11 | LE | 142 |  |  |  | 1531 |  |  |  |  |
| GVT5014248C0 |  | GA-AF ; Ele(#52)- Refurbishment | 35d | 2012-12-18 | 2013-01-29 | GVT5014247C0 |  |  |  |  | 28d | 0d | as late as possible | Labor General; Cost | CVT3914247C0 |  |  | GA | C | VT | 50 | EL | 142 | 47 | BILL 11 | B11 | S1 | 04 | R00 | ACF11 |  | 142 |  |  |  | 1531 |  |  |  |  |

| ID | WBS | Activity | Duration | Start | Finish | Predecessors | Complete | Remaining | Planned start | Planned finish | Total float | Free float | Constraint | Resources | change id | No.of Wor Days | Duration/Differe | P_811 | P_711 | U% | CCAD BUILDING(SET) | CCAD PHASE(SET) | CCAD FLOOR(SET) | CCAD ZONE(SET) | CCAD WORK(SET) | CCAD SECTION(SET) | CCAD SERIAL No.(SET) | CCAD CBS(SET) | CCAD BILL(SET) | CCAD HANDOVER(SET) | CCAD TAG(SET) | CCAD REV(SET) | CCAD (VO) | CCADACF (SET) | CCAD CSA | CCAD SSCF | user_end_date3 | user_end_date4 | user_text4 | NEW ACTIVITY ID |
| --- | --- | --- | --- | --- | --- | --- | --- | --- | --- | --- | --- | --- | --- | --- | --- | --- | --- | --- | --- | --- | --- | --- | --- | --- | --- | --- | --- | --- | --- | --- | --- | --- | --- | --- | --- | --- | --- | --- | --- | --- |
|  | EL53 | **Lift (#53~58)** |  | 2011-08-10 | 2013-01-29 |  |  |  |  |  |  |  |  |  |  |  |  |  |  |  |  |  |  |  |  |  |  |  |  |  |  |  |  |  |  |  |  |  |  |  |
| GVT5314203C0 |  | GA-AF ; Ele(#53~58)- Fixing template, Plumbing (Lift) | 3d | 2011-08-10 A | 2011-10-06 | G03S103399C0, G03S203399C0, GNHE08101C10 FS+34d | 50% | 1.5d | 2011-09-07 | 2011-09-11 | 175d | 0d |  | SERVICE LIFTS [7 h]; Cost | GVT5314203C0 | 125058816 | -16777216 | 25 | 0 | 25 | GA | C | VT | 53 | EL | 142 | 03 | BILL 11 | B11 | S1 | 03 | R00 | CP | ACF11 | LE | 142 |  |  |  |  |
| GVT5314205C0 |  | GA-AF ; Ele(#53~58)- Install first rails (Lift) | 3d | 2011-09-05 A | 2011-10-08 | GVT5314203C0 | 50% | 1.5d | 2011-09-04 | 2011-09-07 | 175d | 0d |  | SERVICE LIFTS [7 h]; Cost | GVT5314205C0 | 123044096 |  |  |  |  | GA | C | VT | 53 | EL | 142 | 05 | BILL 11 | B11 | S1 | 03 | R00 |  | ACF11 | LE | 142 |  |  |  |  |
| GVT5314207C0 |  | GA-AF ; Ele(#53~58)- Build false car (Lift) | 3d | 2011-10-09 | 2011-10-11 | GVT5314205C0 |  |  |  |  | 175d | 0d |  | SERVICE LIFTS [15 h]; Cost | GVT5314207C0 |  | 117440512 |  |  |  | GA | C | VT | 53 | EL | 142 | 07 | BILL 11 | B11 | S1 | 03 | R00 |  | ACF11 | LE | 142 |  |  |  |  |
| GVT5314209C0 |  | GA-AF ; Ele(#53~58)- Install brackets, rails & alignment (Lift) | 10d | 2011-10-12 | 2011-10-23 | GVT5314207C0 |  |  |  |  | 175d | 0d |  | SERVICE LIFTS [224 h]; Cost | GVT5314209C0 | 125058816 | 117440512 |  |  |  | GA | C | VT | 53 | EL | 142 | 09 | BILL 11 | B11 | S1 | 03 | R00 |  | ACF11 | LE | 142 |  |  |  |  |
| GVT5314211C0 |  | GA-AF ; Ele(#53~58)- Install Entrance frames & doors (Lift) | 10d | 2011-10-24 | 2011-11-03 | GVT5314209C0 |  |  |  |  | 175d | 0d |  | SERVICE LIFTS [165 h]; Cost | GVT5314211C0 | -65536 |  |  |  |  | GA | C | VT | 53 | EL | 142 | 11 | BILL 11 | B11 | S1 | 03 | R00 |  | ACF11 | LE | 142 |  |  |  |  |
| GVT5314213C0 |  | GA-AF ; Ele(#53~58)- Install Machine & Controller (Lift) | 15d | 2011-11-05 | 2011-11-24 | GVT5314211C0 |  |  |  |  | 175d | 0d |  | SERVICE LIFTS [239 h]; Cost | GVT5314213C0 | 125058816 | -16777216 |  |  |  | GA | C | VT | 53 | EL | 142 | 13 | BILL 11 | B11 | S1 | 03 | R00 |  | ACF11 | LE | 142 |  |  |  |  |
| GVT5314215C0 |  | GA-AF ; Ele(#53~58)- Install Governor & rope (Lift) | 3d | 2011-11-27 | 2011-11-29 | GVT5314213C0 |  |  |  |  | 175d | 0d |  | SERVICE LIFTS [45 h]; Cost | GVT5314215C0 | 125058816 |  |  |  |  | GA | C | VT | 53 | EL | 142 | 15 | BILL 11 | B11 | S1 | 03 | R00 |  | ACF11 | LE | 142 |  |  |  |  |
| GVT5314217C0 |  | GA-AF ; Ele(#53~58)- Install counterweight frame (Lift) | 2d | 2011-11-30 | 2011-12-01 | GVT5314215C0 |  |  |  |  | 175d | 0d |  | SERVICE LIFTS [45 h]; Cost | GVT5314217C0 | 125058816 |  |  |  |  | GA | C | VT | 53 | EL | 142 | 17 | BILL 11 | B11 | S1 | 03 | R00 |  | ACF11 | LE | 142 | 2011-07-26 |  |  |  |
| GVT5314219C0 |  | GA-AF ; Ele(#53~58)- Hoistway truncking & Wiring (Lift) | 4d | 2011-12-04 | 2011-12-07 | GVT5314217C0 |  |  |  |  | 175d | 0d |  | SERVICE LIFTS [52 h]; Cost | GVT5314219C0 | 123044096 | 1593835520 |  |  |  | GA | C | VT | 53 | EL | 142 | 19 | BILL 11 | B11 | S1 | 03 | R00 |  | ACF11 | LE | 142 | 2011-07-26 | 2011-07-28 | 100 |  |
| GVT5314221C0 |  | GA-AF ; Ele(#53~58)- Machine room wiring (Lift) | 4d | 2011-12-08 | 2011-12-12 | GVT5314219C0 |  |  |  |  | 175d | 0d |  | SERVICE LIFTS [7 h]; Cost | GVT5314221C0 | 1598662912 | -16777216 |  |  |  | GA | C | VT | 53 | EL | 142 | 21 | BILL 11 | B11 | S1 | 03 | R00 |  | ACF11 | LE | 142 | 2011-07-29 | 2011-07-31 |  |  |
| GVT5314223C0 |  | GA-AF ; Ele(#53~58)- Build car frame (Lift) | 3d | 2011-12-13 | 2011-12-15 | GVT5314221C0 |  |  |  |  | 175d | 0d |  | SERVICE LIFTS [90 h]; Cost | GVT5314223C0 | 123044096 | 117440512 |  |  |  | GA | C | VT | 53 | EL | 142 | 23 | BILL 11 | B11 | S1 | 03 | R00 |  | ACF11 | LE | 142 | 2011-08-01 | 2011-08-03 |  |  |
| GVT5314225C0 |  | GA-AF ; Ele(#53~58)- Main roping (Lift) | 3d | 2011-12-17 | 2011-12-19 | GVT5314223C0 |  |  |  |  | 175d | 0d |  | SERVICE LIFTS [45 h]; Cost | GVT5314225C0 | 125058816 |  |  |  |  | GA | C | VT | 53 | EL | 142 | 25 | BILL 11 | B11 | S1 | 03 | R00 |  | ACF11 | LE | 142 | 2011-08-04 | 2011-08-13 |  |  |
| GVT5314227C0 |  | GA-AF ; Ele(#53~58)- Loading counterweights (Lift) | 3d | 2011-12-20 | 2011-12-22 | GVT5314225C0 |  |  |  |  | 175d | 0d |  | SERVICE LIFTS [7 h]; Cost | GVT5314227C0 | 123044096 | 1593835520 |  |  |  | GA | C | VT | 53 | EL | 142 | 27 | BILL 11 | B11 | S1 | 03 | R00 |  | ACF11 | LE | 142 | 2011-08-24 | 2011-09-02 |  |  |
| GVT5314229C0 |  | GA-AF ; Ele(#53~58)- Dismantling false car (Lift) | 2d | 2011-12-24 | 2011-12-25 | GVT5314227C0 |  |  |  |  | 175d | 0d |  | SERVICE LIFTS [7 h]; Cost | GVT5314229C0 | 123044096 |  |  |  |  | GA | C | VT | 53 | EL | 142 | 29 | BILL 11 | B11 | S1 | 03 | R00 |  | ACF11 | LE | 142 | 2011-09-03 | 2011-09-17 |  |  |
| GVT5314231C0 |  | GA-AF ; Ele(#53~58)- Build cab & Wiring (Lift) | 20d | 2011-12-26 | 2012-01-18 | GVT5314229C0 |  |  |  |  | 175d | 0d |  | SERVICE LIFTS [82 h]; Cost | GVT5314231C0 |  |  |  |  |  | GA | C | VT | 53 | EL | 142 | 31 | BILL 11 | B11 | S1 | 03 | R00 |  | ACF11 | LE | 142 |  |  |  |  |
| GVT5314247C0 |  | GA-AF ; Ele(#53~58)- Inspection, Testing & Commis (Lift) | 6d | 2012-01-19 | 2012-01-25 | GVT5314231C0 |  |  |  |  | 175d | 96.12d |  | SERVICE LIFTS [60 h]; Cost | CVT3914247C0 |  |  |  |  |  | GA | C | VT | 53 | EL | 142 | 47 | BILL 11 | B11 | S1 | 03 | R00 |  | ACF11 | LE | 142 |  |  |  | 1531 |
| GVT5314248C0 |  | GA-AF ; Ele#53 & 58 - Refurbishment | 35d | 2012-12-18 | 2013-01-29 | G02M109601C0 FF, GVT5314247C0 |  |  |  |  | 28d | 0d | as late as possible | Labor General [1 h]; Cost | CVT3914247C0 |  |  |  |  |  | GA | C | VT | 53 | EL | 142 | 47 | BILL 11 | B11 | S1 | 03 | R00 |  | ACF11 | LE | 142 |  |  |  | 1531 |
|  | ES07 | **Escalator (#07)** |  | 2011-09-05 | 2012-01-02 |  |  |  |  |  |  |  |  |  |  |  |  |  |  |  |  |  |  |  |  |  |  |  |  |  |  |  |  |  |  |  |  |  |  |  |
| GVT0714349C0 |  | GA-VT ; Esc(#07)- Complete Installation (Escalator) | 66d | 2011-09-05 A | 2011-10-04 | G03S103399C0, G03S203399C0 | 95% | 3.3d | 2011-09-01 | 2011-11-20 | 331.2d | 0d |  | SERVICE LIFTS [524 h]; Cost | GVT0714349C0 | 125058816 |  |  |  |  | GA | C | VT | ES07 | EL | 143 | 49 | BILL 11 | B11 | S1 | 02 | R00 |  | ACF11 | LE | 143 |  |  |  |  |
| GVT0714347C0 |  | GA-VT ; Esc(#07)- Testing & Commissioning (Escalator) | 60d | 2011-10-04 | 2011-12-19 | GVT0714349C0 |  |  |  |  | 331.2d | 0d |  | SERVICE LIFTS [30 h]; Cost | GVT0714347C0 | -256 | 117440512 |  |  |  | GA | C | VT | ES07 | EL | 143 | 47 | BILL 11 | B11 | S1 | 02 | R00 |  | ACF11 | LE | 143 |  |  |  |  |
| GVT0714345C0 |  | GA-VT ; Esc(#07)- Final Inspection (Escalator) | 6d | 2011-12-19 | 2011-12-26 | GVT0714347C0 |  |  |  |  | 331.2d | 0d |  | SERVICE LIFTS [0.5 h]; Cost | GVT0714345C0 | 125058816 |  |  |  |  | GA | C | VT | ES07 | EL | 143 | 45 | BILL 11 | B11 | S1 | 02 | R00 |  | ACF11 | LE | 143 |  |  |  |  |
| GVT0714341C0 |  | GA-VT ; Esc(#07)- Adjustments (Escalator) | 5d | 2011-12-26 | 2012-01-02 | GVT0714345C0 |  |  |  |  | 331.2d | 294.7d |  | SERVICE LIFTS [60 h]; Cost | GVT0714341C0 | 127480320 | -16777216 |  |  |  | GA | C | VT | ES07 | EL | 143 | 41 | BILL 11 | B11 | S1 | 02 | R00 |  | ACF11 | LE | 143 |  |  |  |  |
|  | ES09 | **Escalator (#09)** |  | 2011-09-05 | 2012-01-02 |  |  |  |  |  |  |  |  |  |  |  |  |  |  |  |  |  |  |  |  |  |  |  |  |  |  |  |  |  |  |  |  |  |  |  |
| GVT0914349C0 |  | GA-VT ; Esc(#09)- Complete Installation (Escalator) | 66d | 2011-09-05 A | 2011-10-04 | GVT0714349C0 SS, G03S103399C0, G03S203399C0 | 95% | 3.3d | 2011-09-01 | 2011-11-20 | 331.2d | 0d |  | SERVICE LIFTS [524 h]; Cost | GVT0914349C0 | 125058816 |  |  |  |  | GA | C | VT | ES09 | EL | 143 | 49 | BILL 11 | B11 | S1 | 01 | R00 |  | ACF11 | LE | 143 |  |  |  |  |
| GVT0914347C0 |  | GA-VT ; Esc(#09)- Testing & Commissioning (Escalator) | 60d | 2011-10-04 | 2011-12-19 | GVT0914349C0 |  |  |  |  | 331.2d | 0d |  | SERVICE LIFTS [30 h]; Cost | GVT0914347C0 | 125058816 | 117440512 |  |  |  | GA | C | VT | ES09 | EL | 143 | 47 | BILL 11 | B11 | S1 | 01 | R00 |  | ACF11 | LE | 143 |  |  |  |  |
| GVT0914345C0 |  | GA-VT ; Esc(#09)- Final Inspection (Escalator) | 6d | 2011-12-19 | 2011-12-26 | GVT0914347C0 |  |  |  |  | 331.2d | 0d |  | SERVICE LIFTS [0.5 h]; Cost | GVT0914345C0 | 123044096 |  |  |  |  | GA | C | VT | ES09 | EL | 143 | 45 | BILL 11 | B11 | S1 | 01 | R00 |  | ACF11 | LE | 143 |  |  |  |  |
| GVT0914341C0 |  | GA-VT ; Esc(#09)- Adjustments (Escalator) | 5d | 2011-12-26 | 2012-01-02 | GVT0914345C0 |  |  |  |  | 331.2d | 294.7d |  | SERVICE LIFTS [60 h]; Cost | GVT0914341C0 | 125058816 |  |  |  |  | GA | C | VT | ES09 | EL | 143 | 41 | BILL 11 | B11 | S1 | 01 | R00 |  | ACF11 | LE | 143 |  |  |  |  |

| ID | WBS | Activity | Duration | Start | Finish | Predecessors | Complete | Remaining | Planned start | Planned finish | Total float | Free float | Resources | change id | No.of Wor Days | Duration/Differe | CCAD BUILDING(SET) | CCAD PHASE(SET) | CCAD FLOOR(SET) | CCAD ZONE(SET) | CCAD WORK(SET) | CCAD SECTION(SET) | CCAD SERIAL No.(SET) | CCAD CBS(SET) | CCAD BILL(SET) | CCAD HANDOVER(SET) | CCAD TAG(SET) | CCAD REV(SET) | CCADACF (SET) | CCAD CSA | CCAD SSCF | CCAD RESPONSIBILITY(SET) | Change Order # | NEW ACTIVITY ID | RENZ % COMPLETE | CCAD DIVISION(SET) |
| --- | --- | --- | --- | --- | --- | --- | --- | --- | --- | --- | --- | --- | --- | --- | --- | --- | --- | --- | --- | --- | --- | --- | --- | --- | --- | --- | --- | --- | --- | --- | --- | --- | --- | --- | --- | --- |
|  | ES11 | **Escalator (#11)** |  | 2011-09-05 | 2012-01-02 |  |  |  |  |  |  |  |  |  |  |  |  |  |  |  |  |  |  |  |  |  |  |  |  |  |  |  |  |  |  |  |
| GVT1114349C0 |  | GA-VT ; Esc(#11)- Complete Installation (Escalator) | 66d | 2011-09-05 A | 2011-10-04 | G03S103399C0, G03S203399C0 | 95% | 3.3d | 2011-09-01 | 2011-11-20 | 313.2d | 0d | SERVICE LIFTS [539 h]; Cost | GVT1114349C0 | 125612032 | 117440512 | GA | C | VT | ES11 | EL | 143 | 49 | BILL 11 | B11 | S1 | 03 | R00 | ACF11 | LE | 143 |  |  |  |  |  |
| GVT1114347C0 |  | GA-VT ; Esc(#11)- Testing & Commissioning (Escalator) | 60d | 2011-10-04 | 2011-12-19 | GVT1114349C0 |  |  |  |  | 313.2d | 0d | SERVICE LIFTS [30 h]; Cost | GVT1114347C0 | 123044096 | 117440512 | GA | C | VT | ES11 | EL | 143 | 47 | BILL 11 | B11 | S1 | 03 | R00 | ACF11 | LE | 143 |  |  |  |  |  |
| GVT1114345C0 |  | GA-VT ; Esc(#11)- Final Inspection (Escalator) | 6d | 2011-12-19 | 2011-12-26 | GVT1114347C0 |  |  |  |  | 313.2d | 0d | SERVICE LIFTS [0.5 h]; Cost | GVT1114345C0 | 125058816 |  | GA | C | VT | ES11 | EL | 143 | 45 | BILL 11 | B11 | S1 | 03 | R00 | ACF11 | LE | 143 |  |  |  |  |  |
| GVT1114341C0 |  | GA-VT ; Esc(#11)- Adjustments (Escalator) | 5d | 2011-12-26 | 2012-01-02 | GVT1114345C0 |  |  |  |  | 313.2d | 272.9d | SERVICE LIFTS [60 h]; Cost | GVT1114341C0 | 125616128 | 117440512 | GA | C | VT | ES11 | EL | 143 | 41 | BILL 11 | B11 | S1 | 03 | R00 | ACF11 | LE | 143 |  |  |  |  |  |
|  | CZ | **Controlled Zone** |  | 2013-01-30 | 2013-02-26 |  |  |  |  |  |  |  |  |  |  |  |  |  |  |  |  |  |  |  |  |  |  |  |  |  |  |  |  |  |  |  |
| GGNCZ01010G0 |  | GA-GN ; Minor Punch List (Controlled Zone) | 23d | 2013-01-30 | 2013-02-25 | MGNCZ00105M0 |  |  |  |  | 58d | 0d | TESTING & COMMISSIONING [708 h]; Cost | GGNCZ01010G0 |  |  | GA | G | GN | CZ | SC | 010 | 10 | BILL 6 | B06 | S1 | PI | R00 | ACF07 |  | 010 | PP |  |  |  |  |
| GGNCZ01810G0 |  | GA-GN ; Medical Equipment Installation , T&C by 3rd Party (Controlled Zone) | 0d | 2013-01-30 | 2013-01-30 | MGNCZ00105M0 |  |  |  |  | 81d | 23d | Cost |  |  |  | GA |  |  | CZ |  |  |  |  | B06 |  |  | R00 |  |  | GEN |  |  |  |  |  |
| GGNCZ01811G0 |  | GA-GN ; Fire Alarm , PMCS & EMCS Testing & Commissioning (Controlled Zone) | 23d | 2013-01-30 | 2013-02-25 | MGNCZ00105M0 |  |  |  |  | 58d | 0d | TESTING & COMMISSIONING [4248 h]; Cost | GGNCZ01811G0 |  |  | GA | G | GN | CZ | SC | 018 | 11 | BILL 6 | B06 | S1 | 01 | R00 | ACF07 |  | 018 | PP |  |  |  |  |
| GGNCZ11010G0 |  | GA-GN ; Loose FF & E (Controlled Zone) | 23d | 2013-01-30 | 2013-02-25 | MGNCZ00105M0 |  |  |  |  | 58d | 0d | FF&E [9 h]; FF&E [3.14 no]; Cost | GGNCZ11010G0 |  |  | GA | G | GN | CZ | FI | 110 | 10 | BILL 6 | B06 | S1 | 02 | R00 | ACF08 |  | a | PP |  |  |  |  |
| GGNCZ11020G0 |  | GA-GN ; Wall Mounted / Sensitive Equipment Install (Controlled Zone) | 0d | 2013-01-30 | 2013-01-30 | MGNCZ00105M0 |  |  |  |  | 81d | 23d | Cost | GGNCZ11020G0 |  |  | GA | G | GN | CZ | SC | 110 | 20 | BILL 6 | B06 | S1 | 02 | R00 | ACF08 |  | d | PP |  |  |  |  |
| GGNCZ01100G0 |  | GA-GN ; Cleaning & Final Inspection (Controlled Zone) | 0d | 2013-02-26 | 2013-02-26 | GGNCZ01810G0, GGNCZ11010G0, GGNCZ01010G0, GGNCZ11020G0, GGNCZ01811G0 |  |  |  |  | 58d | 55.12d | Cost | TGNCZ01020G0 |  |  | PT | G | GN | CZ | SC | 010 | 20 | BILL 10 | B10 | S3 | IN | R00 | ACF07 |  | 010 |  |  |  |  |  |
|  | IC | **ICU** |  | 2010-09-15 | 2013-03-06 |  |  |  |  |  |  |  |  |  |  |  |  |  |  |  |  |  |  |  |  |  |  |  |  |  |  |  |  |  |  |  |
|  | OA | **Overall** |  | 2011-10-05 | 2011-11-01 |  |  |  |  |  |  |  |  |  |  |  |  |  |  |  |  |  |  |  |  |  |  |  |  |  |  |  |  |  |  |  |
| IAFT805509C0 |  | IC - Steel Staircase Installation (Stair # 8) (6F to 8FR) | 22.88d | 2011-10-05 | 2011-11-01 | DAFT805509C0 |  |  |  |  | 155.39d | 0d | STRUCTURAL STEEL [39 T(Fe)]; Cost | IP3SE03305C0 |  |  | IC | C | AF | GEN | SW | 055 | 05 |  | B08 | S1 | 01 | R00 | ACF03 | ST | 055 |  |  |  |  |  |
|  | FN | **Foundation** |  | 2010-09-15 | 2010-10-21 |  |  |  |  |  |  |  |  |  |  |  |  |  |  |  |  |  |  |  |  |  |  |  |  |  |  |  |  |  |  |  |
|  | SE | **Zone SE** |  | 2010-09-15 | 2010-10-21 |  |  |  |  |  |  |  |  |  |  |  |  |  |  |  |  |  |  |  |  |  |  |  |  |  |  |  |  |  |  |  |
| IFNSE03305C0 |  | IC-FN ; Blinding concrete (Zone SE) | 6d | 2010-09-15 A | 2010-09-18 A | IFNSE31203C0 | 100% |  | 2010-06-06 | 2010-06-12 |  |  | CONCRETE [48 h]; Cost | IFNSE03305C0 |  |  | IC | C | FN | SE | CT | 033 | 05 | BILL 8 | B02 | S1 | 01 | R00 | ACF02 |  | 033 |  | 17 | 17 | 100 | 03 |
| IFNSE03309C0 |  | IC-FN ; Raft concrete (Zone SE) | 12d | 2010-09-19 A | 2010-09-21 A | IFNSE07107C0 | 100% |  | 2010-06-20 | 2010-07-03 |  |  | CONCRETE [232 h]; Cost | IFNSE03309C0 |  |  | IC | C | FN | SE | CT | 033 | 09 | BILL 8 | B02 | S1 | 04 | R00 | ACF03 |  | 033 |  | 19 | 19 | 100 | 03 |
| IFNSE03311C0 |  | IC-FN ; Wall concrete (Zone SE) | 18d | 2010-09-22 A | 2010-10-21 A | IFNSE03309C0 | 100% |  | 2010-07-04 | 2010-07-25 |  |  | CONCRETE [96 h]; Cost | IFNSE03311C0 |  |  | IC | C | FN | SE | CT | 033 | 11 | BILL 8 | B02 | S1 | 04 | R00 | ACF03 |  | 033 |  | 20 | 20 | 100 | 03 |
| IFNSE07107C0 |  | IC-FN ; Horizontal waterproofing (Zone SE) | 5d | 2010-09-27 A | 2010-10-03 A | IFNSE03305C0 | 100% |  | 2010-06-13 | 2010-06-17 |  |  | Cost | IFNSE07107C0 |  |  | IC | C | FN | SE | CT | 071 | 07 | BILL 8 | B02 | S1 | 02 | R00 | ACF02 |  | 071 |  | 18 | 18 | 100 |  |
| IFNSE07113C0 |  | IC-FN ; Vertical waterproofing (Zone SE) | 5d | 2010-09-28 A | 2010-10-02 A | IFNSE03311C0 | 100% |  | 2010-07-26 | 2010-07-31 |  |  | Cost | IFNSE07113C0 |  |  | IC | C | FN | SE | CT | 071 | 13 | BILL 8 | B02 | S1 | 03 | R00 | ACF02 |  | 071 |  | 21 | 21 | 100 |  |
| IFNSE31201C0 |  | IC-FN ; Excavation & Compaction (Zone SE) | 5d | 2010-10-02 A | 2010-10-06 A | DFNSA31203C0, DFNSB31213C0 | 100% |  | 2010-05-16 | 2010-05-20 |  |  | Cost | IFNSE31201C0 |  |  | IC | C | FN | SE | CT | 312 | 01 | BILL 8 | B02 | S1 | 03 | R00 | ACF02 |  | 312 |  | 16 | 16 | 100 |  |
| IFNSE31203C0 |  | IC-FN ; Pilecap treatment (Zone SE) | 11d | 2010-10-03 A | 2010-10-08 A | IFNSE31201C0 | 100% |  | 2010-05-23 | 2010-06-03 |  |  | Cost | IFNSE31203C0 |  |  | IC | C | FN | SE | CT | 312 | 03 | BILL 8 | B02 | S1 | 02 | R00 | ACF02 |  | 312 |  | 2 | 2 | 100 |  |
| IFNSE31215C0 |  | IC-FN ; Backfilling & compaction (Zone SE) | 5d | 2010-10-06 A | 2010-10-12 A | IFNSE07113C0 | 100% |  | 2010-08-02 | 2010-08-07 |  |  | Cost | IFNSE31215C0 |  |  | IC | C | FN | SE | CT | 312 | 15 | BILL 8 | B02 | S1 | 03 | R00 | ACF02 |  | 312 |  | 22 | 22 | 100 |  |

| ID | WBS | Activity | Duration | Start | Finish | Predecessors | Complete | Remaining | Planned start | Planned finish | Total float | Free float | Resources | change id | RENZ % COMPLETE | CCAD BUILDING(SET) | CCAD PHASE(SET) | CCAD FLOOR(SET) | CCAD ZONE(SET) | CCAD WORK(SET) | CCAD SECTION(SET) | CCAD SERIAL No.(SET) | CCAD CBS(SET) | CCAD BILL(SET) | CCAD HANDOVER(SET) | CCAD TAG(SET) | CCAD REV(SET) | CCADACF (SET) | CCAD SSCF | CCAD CSA |
| --- | --- | --- | --- | --- | --- | --- | --- | --- | --- | --- | --- | --- | --- | --- | --- | --- | --- | --- | --- | --- | --- | --- | --- | --- | --- | --- | --- | --- | --- | --- |
|  | P3 | **Level Podium 3** |  | 2010-10-11 | 2011-10-04 |  |  |  |  |  |  |  |  |  |  |  |  |  |  |  |  |  |  |  |  |  |  |  |  |  |
|  | 01 | **Structure & Envelopment** |  | 2010-10-11 | 2011-10-04 |  |  |  |  |  |  |  |  |  |  |  |  |  |  |  |  |  |  |  |  |  |  |  |  |  |
| IP3SE03305C0 |  | IC-P3 ; Corewall Concrete (Zone SE) | 29.25d | 2010-10-11 A | 2010-10-20 A | IFNSE31215C0 | 100% |  | 2010-08-09 | 2010-09-13 |  |  | CONCRETE [1432 h]; CONCRETE [36 m3]; Cost | IP3SE03305C0 | 100 | IC | C | P3 | SE | CT | 033 | 05 | BILL 8 | B08 | S1 | 04 | R00 | ACF03 | 033 |  |
| IP3SE05509C0 |  | IC-P3 ; Steel Staircase & welding/bolting (Stair F5 & 6) (Zone SE) | 7d | 2011-09-05 A | 2011-10-04 | I04SE03305C0, IAFT605509C0 FS+3d, IP3SE03305C0 | 90% | 0.7d | 2011-09-05 | 2011-09-12 | 127.31d | 0d | STRUCTURAL STEEL [91 h]; STRUCTURAL STEEL [8 T(Fe)]; Cost | IP3SE03305C0 |  | IC | C | P3 | SE | SW | 055 | 05 | BILL 8 | B08 | S1 | 01 | R00 | ACF03 | 055 | ST |
|  | P2 | **Level Podium 2** |  | 2010-10-21 | 2011-10-05 |  |  |  |  |  |  |  |  |  |  |  |  |  |  |  |  |  |  |  |  |  |  |  |  |  |
|  | 01 | **Structure & Envelopment** |  | 2010-10-21 | 2011-10-05 |  |  |  |  |  |  |  |  |  |  |  |  |  |  |  |  |  |  |  |  |  |  |  |  |  |
| IP2SE03305C0 |  | IC-P2 ; Corewall Concrete (Zone SE) | 7d | 2010-10-21 A | 2010-10-31 A | IP3SE03305C0 | 100% |  | 2010-09-13 | 2010-09-21 |  |  | CONCRETE [2064 h]; CONCRETE [52 m3]; Cost | IP2SE03305C0 | 100 | IC | C | P2 | SE | CT | 033 | 05 | BILL 8 | B08 | S1 | 04 | R00 | ACF03 | 033 |  |
| IP2SE05509C0 |  | IC-P2 ; Steel Staircase & welding/bolting (Stair F5 & 6) (Zone SE) | 6.88d | 2011-09-05 A | 2011-10-05 | IP2SE03305C0, IP3SE05509C0 | 90% | 0.69d | 2011-09-13 | 2011-09-20 | 127.31d | 0d | STRUCTURAL STEEL [91 h]; STRUCTURAL STEEL [7 T(Fe)]; Cost | IP3SE03305C0 |  | IC | C | P2 | SE | SW | 055 | 05 | BILL 8 | B08 | S1 | 01 | R00 | ACF03 | 055 | ST |
|  | P1 | **Level Podium 1** |  | 2010-11-02 | 2011-10-06 |  |  |  |  |  |  |  |  |  |  |  |  |  |  |  |  |  |  |  |  |  |  |  |  |  |
|  | 01 | **Structure & Envelopment** |  | 2010-11-02 | 2011-10-06 |  |  |  |  |  |  |  |  |  |  |  |  |  |  |  |  |  |  |  |  |  |  |  |  |  |
| IP1SE03305C0 |  | IC-P1 ; Corewall Concrete (Zone SE) | 5d | 2010-11-02 A | 2010-11-13 A | IP2SE03305C0 | 100% |  | 2010-11-01 | 2010-11-06 |  |  | CONCRETE [2064 h]; CONCRETE [52 m3]; Cost | IP1SE03305C0 | 100 | IC | C | P1 | SE | CT | 033 | 05 | BILL 8 | B08 | S1 | 04 | R00 | ACF03 | 033 |  |
| IP1SE05509C0 |  | IC-P1 ; Steel Staircase & welding/bolting (Stair F5 & 6) (Zone SE) | 7d | 2011-09-05 A | 2011-10-06 | IP1SE03305C0, IP2SE05509C0 | 90% | 0.7d | 2011-09-20 | 2011-09-28 | 127.31d | 0d | STRUCTURAL STEEL [91 h]; STRUCTURAL STEEL [7 T(Fe)]; Cost | IP3SE03305C0 |  | IC | C | P1 | SE | SW | 055 | 05 | BILL 8 | B08 | S1 | 01 | R00 | ACF03 | 055 | ST |
|  | GL | **Ground Level** |  | 2010-11-14 | 2011-10-06 |  |  |  |  |  |  |  |  |  |  |  |  |  |  |  |  |  |  |  |  |  |  |  |  |  |
|  | 01 | **Structure & Envelopment** |  | 2010-11-14 | 2011-10-06 |  |  |  |  |  |  |  |  |  |  |  |  |  |  |  |  |  |  |  |  |  |  |  |  |  |
| IGLSE03305C0 |  | IC-GL ; Corewall Concrete (Zone SE) | 4.88d | 2010-11-14 A | 2010-11-22 A | IP1SE03305C0 | 100% |  | 2010-11-07 | 2010-11-11 |  |  | CONCRETE [2464 h]; CONCRETE [62 m3]; Cost | IGLSE03305C0 | 100 | IC | C | GL | SE | CT | 033 | 05 | BILL 8 | B08 | S2 | 04 | R00 | ACF03 | 033 |  |
| IGLSE05509C0 |  | IC-GL ; Steel Staircase & welding/bolting (Stair F5 & 6) (Zone SE) | 7d | 2011-09-05 A | 2011-10-06 | IGLSE03305C0, IP1SE05509C0 | 90% | 0.7d | 2011-09-28 | 2011-10-06 | 127.31d | 0d | STRUCTURAL STEEL [91 h]; STRUCTURAL STEEL [7 T(Fe)]; Cost | IP3SE03305C0 |  | IC | C | GL | SE | SW | 055 | 05 | BILL 8 | B08 | S2 | 01 | R00 | ACF03 | 055 | ST |
|  | 01 | **Level 1** |  | 2010-11-23 | 2011-10-08 |  |  |  |  |  |  |  |  |  |  |  |  |  |  |  |  |  |  |  |  |  |  |  |  |  |
|  | 01 | **Structure & Envelopment** |  | 2010-11-23 | 2011-10-08 |  |  |  |  |  |  |  |  |  |  |  |  |  |  |  |  |  |  |  |  |  |  |  |  |  |
| I01SE03305C0 |  | IC-01 ; Corewall Concrete (Zone SE) | 5d | 2010-11-23 A | 2010-11-30 A | IGLSE03305C0 | 100% |  | 2010-11-13 | 2010-11-21 |  |  | CONCRETE [2464 h]; CONCRETE [62 m3]; Cost | I01SE03305C0 | 100 | IC | C | 01 | SE | CT | 033 | 05 | BILL 8 | B08 | S2 | 04 | R00 | ACF03 | 033 |  |
| I01SE05509C0 |  | IC-01 ; Steel Staircase & welding/bolting (Stair F5 & 6) (Zone SE) | 7d | 2011-09-05 A | 2011-10-08 | I01SE03305C0, IGLSE05509C0 | 90% | 0.7d | 2011-10-08 | 2011-10-15 | 127.31d | 0d | STRUCTURAL STEEL [91 h]; STRUCTURAL STEEL [7 T(Fe)]; Cost | IP3SE03305C0 |  | IC | C | 01 | SE | SW | 055 | 05 | BILL 8 | B08 | S2 | 01 | R00 | ACF03 | 055 | ST |
|  | 02 | **Level 2** |  | 2010-12-08 | 2011-10-09 |  |  |  |  |  |  |  |  |  |  |  |  |  |  |  |  |  |  |  |  |  |  |  |  |  |
|  | 01 | **Structure & Envelopment** |  | 2010-12-08 | 2011-10-09 |  |  |  |  |  |  |  |  |  |  |  |  |  |  |  |  |  |  |  |  |  |  |  |  |  |
| I02SE03305C0 |  | IC-02 ; Corewall Concrete (Zone SE) | 5d | 2010-12-08 A | 2010-12-14 A | I01SE03305C0 | 100% |  | 2010-12-01 | 2010-12-06 |  |  | CONCRETE [2464 h]; CONCRETE [62 m3]; Cost | I02SE03305C0 | 100 | IC | C | 02 | SE | CT | 033 | 05 | BILL 8 | B08 | S2 | 04 | R00 | ACF03 | 033 |  |
| I02SE05509C0 |  | IC-02 ; Steel Staircase & welding/bolting (Stair F5 & 6) (Zone SE) | 6d | 2011-09-05 A | 2011-10-09 | I01SE05509C0, I02SE03305C0 | 80% | 1.2d | 2011-10-15 | 2011-10-22 | 127.31d | 0d | STRUCTURAL STEEL [91 h]; STRUCTURAL STEEL [7 T(Fe)]; Cost | IP3SE03305C0 |  | IC | C | 02 | SE | SW | 055 | 05 | BILL 8 | B08 | S2 | 01 | R00 | ACF03 | 055 | ST |

| ID | WBS | Activity | Type | Duration | Start | Finish | Predecessors | Complete | Remaining | Planned start | Planned finish | Total float | Free float | Resources | change id | RENZ % COMPLETE | CCAD BUILDING(SET) | CCAD PHASE(SET) | CCAD FLOOR(SET) | CCAD ZONE(SET) | CCAD WORK(SET) | CCAD SECTION(SET) | CCAD SERIAL No.(SET) | CCAD CBS(SET) | CCAD BILL(SET) | CCAD HANDOVER(SET) | CCAD TAG(SET) | CCAD REV(SET) | CCADACF (SET) | CCAD SSCF | CCAD CSA | Actual Cost | Phase | Area/ Department | Grids | Are | Weight & Nos | Process | Levels | Claimed This Month | Change Order # | NEW ACTIVITY ID |
| --- | --- | --- | --- | --- | --- | --- | --- | --- | --- | --- | --- | --- | --- | --- | --- | --- | --- | --- | --- | --- | --- | --- | --- | --- | --- | --- | --- | --- | --- | --- | --- | --- | --- | --- | --- | --- | --- | --- | --- | --- | --- | --- |
|  | 03 | **Level 3** |  |  | 2010-12-14 | 2011-10-16 |  |  |  |  |  |  |  |  |  |  |  |  |  |  |  |  |  |  |  |  |  |  |  |  |  |  |  |  |  |  |  |  |  |  |  |  |
|  | 01 | **Structure & Envelopment** |  |  | 2010-12-14 | 2011-10-16 |  |  |  |  |  |  |  |  |  |  |  |  |  |  |  |  |  |  |  |  |  |  |  |  |  |  |  |  |  |  |  |  |  |  |  |  |
| I03SE03305C0 |  | IC-03 ; Corewall Concrete (Zone SE) |  | 5d | 2010-12-14 A | 2010-12-21 A | I02SE03305C0 | 100% |  | 2010-12-08 | 2010-12-13 |  |  | CONCRETE [2464 h]; CONCRETE [62 m3]; Cost | I03SE03305C0 | 100 | IC | C | 03 | SE | CT | 033 | 05 | BILL 8 | B08 | S2 | 04 | R00 | ACF03 | 033 |  |  |  |  |  |  |  |  |  |  |  |  |
| I03SE05509C0 |  | IC-03 ; Steel Staircase & welding/bolting (Stair F5 & 6) (Zone SE) |  | 6d | 2011-10-09 | 2011-10-16 | I02SE05509C0, I03SE03305C0 |  |  |  |  | 127.31d | 0d | STRUCTURAL STEEL [91 h]; STRUCTURAL STEEL [7 T(Fe)]; Cost | IP3SE03305C0 |  | IC | C | 03 | SE | SW | 055 | 05 | BILL 8 | B08 | S2 | 01 | R00 | ACF03 | 055 | ST |  |  |  |  |  |  |  |  |  |  |  |
|  | 04 | **Level 4** |  |  | 2010-12-21 | 2011-10-23 |  |  |  |  |  |  |  |  |  |  |  |  |  |  |  |  |  |  |  |  |  |  |  |  |  |  |  |  |  |  |  |  |  |  |  |  |
|  | 01 | **Structure & Envelopment** |  |  | 2010-12-21 | 2011-10-23 |  |  |  |  |  |  |  |  |  |  |  |  |  |  |  |  |  |  |  |  |  |  |  |  |  |  |  |  |  |  |  |  |  |  |  |  |
| I04SE03305C0 |  | IC-04 ; Corewall Concrete (Zone SE) |  | 5d | 2010-12-21 A | 2010-12-30 A | I03SE03305C0 | 100% |  | 2010-12-14 | 2010-12-19 |  |  | CONCRETE [2464 h]; CONCRETE [62 m3]; Cost | I04SE03305C0 | 100 | IC | C | 04 | SE | CT | 033 | 05 | BILL 8 | B08 | S2 | 04 | R00 | ACF03 | 033 |  |  |  |  |  |  |  |  |  |  |  |  |
| I04SE05509C0 |  | IC-04 ; Steel Staircase & welding/bolting (Stair F5 & 6) (Zone SE) |  | 6d | 2011-10-16 | 2011-10-23 | I03SE05509C0, I04SE03305C0 |  |  |  |  | 127.31d | 0d | STRUCTURAL STEEL [91 h]; STRUCTURAL STEEL [7 T(Fe)]; Cost | IP3SE03305C0 |  | IC | C | 04 | SE | SW | 055 | 05 | BILL 8 | B08 | S2 | 01 | R00 | ACF03 | 055 | ST |  |  |  |  |  |  |  |  |  |  |  |
|  | 05 | **Level 5** |  |  | 2010-11-08 | 2012-12-19 |  |  |  |  |  |  |  |  |  |  |  |  |  |  |  |  |  |  |  |  |  |  |  |  |  |  |  |  |  |  |  |  |  |  |  |  |
|  | 01 | **Structure & Envelopment** |  |  | 2010-11-08 | 2012-04-21 |  |  |  |  |  |  |  |  |  |  |  |  |  |  |  |  |  |  |  |  |  |  |  |  |  |  |  |  |  |  |  |  |  |  |  |  |
| I05SB03303C0 |  | IC-05 ; Corewall Concrete (Zone SB) |  | 3d | 2010-11-08 A | 2010-11-18 A | D04SB03303C0 | 100% |  | 2011-01-02 | 2011-01-04 |  |  | CONCRETE [8712 h]; CONCRETE [219 m3]; Cost | I05SB03303C0 | 100 | IC | C | 05 | SB | CT | 033 | 03 | BILL 8 | B08 | S2 | 04 | R00 | ACF03 | 033 |  |  |  |  |  |  |  |  |  |  |  |  |
| I05S105101C0 |  | IC-05 ; Erection of Structural Steel of 5th Floor (Zone S1) |  | 5.56d | 2010-12-13 A | 2011-04-10 A | D04S105103C0, I05SB03303C0, OGNMU00005S0 | 100% |  | 2011-01-12 | 2011-01-18 |  |  | STRUCTURAL STEEL [3398 h]; STRUCTURAL STEEL [124 T(Fe)]; Cost | I05S105101C0 | 100 | IC | C | 05 | S1 | ST | 051 | 01 | BILL 8 | B08 | S2 | 01 | R00 | ACF03 | 051 | ST | 1957343.25 | Z2 | DT | P03 | O | A3 | EREC | 1FLR |  |  |  |
| I05S205101C0 |  | IC-05 ; Erection of Structural Steel of 5th Floor (Zone S2) |  | 8d | 2010-12-18 A | 2011-04-18 A | D04S205103C0, I05SE03305C0 | 100% |  | 2011-02-14 | 2011-02-23 |  |  | STRUCTURAL STEEL [6896 h]; STRUCTURAL STEEL [251 T(Fe)]; Cost | I05S205101C0 | 100 | IC | C | 05 | S2 | ST | 051 | 01 | BILL 8 | B08 | S2 | 01 | R00 | ACF03 | 051 | ST |  | Z2 | DT | P03 | O | A3 | EREC | 1FLR |  |  |  |
| I05S105103C0 |  | IC-05 ; Alignment & welding of 5th Floor (Zone S1) |  | 5d | 2010-12-20 A | 2011-05-30 A | I05S105101C0 | 100% |  | 2011-01-19 | 2011-01-25 |  |  | STRUCTURAL STEEL [522 h]; Cost | I05S105103C0 | 100 | IC | C | 05 | S1 | ST | 051 | 03 | BILL 8 | B08 | S2 | 02 | R00 | ACF03 | 051 | ST | 217482.58 | Z2 | DT | P03 | O | A3 | EREC | 1FLR |  |  |  |
| I05SE03305C0 |  | IC-05 ; Corewall Concrete (Zone SE) |  | 4.88d | 2010-12-21 A | 2010-12-30 A | I04SE03305C0 | 100% |  | 2011-01-02 | 2011-01-06 |  |  | CONCRETE [2064 h]; CONCRETE [52 m3]; Cost | I05SE03305C0 | 100 | IC | C | 05 | SE | CT | 033 | 05 | BILL 8 | B08 | S2 | 04 | R00 | ACF03 | 033 |  |  |  |  |  |  |  |  |  |  |  |  |
| I05S205103C0 |  | IC-05 ; Alignment & welding of 5th Floor (Zone S2) |  | 10.12d | 2011-01-05 A | 2011-05-30 A | I05S205101C0 | 100% |  | 2011-01-20 | 2011-02-01 |  |  | STRUCTURAL STEEL [1101 h]; Cost | I05S205103C0 | 100 | IC | C | 05 | S2 | ST | 051 | 03 | BILL 8 | B08 | S2 | 02 | R00 | ACF03 | 051 | ST |  | Z2 | DT | P03 | O | A3 | EREC | 1FLR |  |  |  |
| I05S105305C0 |  | IC-05 ; Metal Decking 5th FLR (Zone S1) |  | 15d | 2011-02-21 A | 2011-02-28 A | I05S105103C0, I06S105101C0, OGNMU00005S0 | 100% |  | 2011-02-02 | 2011-02-20 |  |  | METAL DECKING [1095 h]; METAL DECKING [1386 m2]; Cost | I05S105305C0 | 100 | IC | C | 05 | S1 | ST | 053 | 05 | BILL 8 | B08 | S2 | 03 | R00 | ACF03 | 053 | ST |  | Z2 | DT | P03 | O | A3 | MDEC | 1FLR |  |  |  |
| I05S205305C0 |  | IC-05 ; Metal Decking 5th FLR (Zone S2) |  | 18d | 2011-03-05 A | 2011-05-30 A | I05S205103C0, I06S205101C0 | 100% |  | 2011-03-06 | 2011-03-27 |  |  | METAL DECKING [2264 h]; METAL DECKING [2866 m2]; Cost | I05S205305C0 | 100 | IC | C | 05 | S2 | ST | 053 | 05 | BILL 8 | B08 | S2 | 03 | R00 | ACF03 | 053 | ST |  | Z2 | DT | P03 | O | A3 | MDEC | 1FLR |  |  |  |
| I05S103399C0 |  | IC-05 ; Concrete on Metal Decking 5th FLR (Zone S1) |  | 10d | 2011-04-03 A | 2011-04-18 A | I05S105305C0 | 100% |  | 2011-03-01 | 2011-03-13 |  |  | CONCRETE [13320 h]; CONCRETE [335 m3]; Cost | I05S105335C0 | 100 | IC | C | 05 | S1 | CT | 033 | 99 | BILL 8 | B08 | S2 | 08 | R00 | ACF03 | 033 |  |  | Z2 | DT | P03 | O | A3 | MDEC | 1FLR |  |  |  |
| I05S203399C0 |  | IC-05 ; Concrete on Metal Decking 5th FLR (Zone S2) |  | 10d | 2011-04-13 A | 2011-06-02 A | I05S205305C0 | 100% |  | 2011-03-27 | 2011-04-07 |  |  | CONCRETE [13320 h]; CONCRETE [335 m3]; Cost | I05S205335C0 | 95 | IC | C | 05 | S2 | CT | 033 | 99 | BILL 8 | B08 | S2 | 08 | R00 | ACF03 | 033 |  |  | Z2 | DT | P03 | O | A3 | MDEC | 1FLR | 19243.37 |  |  |
| I05S107807C0 |  | IC-05 ; Cementitious Fire Proofing works 5th FLR (Zone S1) |  | 10d | 2011-05-02 A | 2011-06-29 A | I05S103399C0, I06S103399C0 | 100% |  | 2011-06-01 | 2011-06-13 |  |  | CEMENTITIOUS FIREPROOFING [1081 h]; CEMENTITIOUS FIREPROOFING [2161 m2]; Cost | I05S107807C0 | 95 | IC | C | 05 | S1 | ST | 078 | 07 | BILL 8 | B08 | S2 | 04 | R00 | ACF03 | 078 | ST |  | Z2 | DT | P03 | O | A3 | FIRE | 1FLR | 9450.86 |  |  |
| I05S207807C0 |  | IC-05 ; Cementitious Fire Proofing works 5th FLR (Zone S2) |  | 14d | 2011-05-15 A | 2011-07-19 A | I05S203399C0, I06S203399C0 | 100% |  | 2011-06-01 | 2011-06-18 |  |  | CEMENTITIOUS FIREPROOFING [2234 h]; CEMENTITIOUS FIREPROOFING [4467 m2]; Cost | I05S207807C0 | 80 | IC | C | 05 | S2 | ST | 078 | 07 | BILL 8 | B08 | S2 | 04 | R00 | ACF03 | 078 | ST |  | Z2 | DT | P03 | O | A3 | FIRE | 1FLR | 78158.04 |  |  |
| I05GN02301C0 |  | IC-05 ; Temporary Enclosure | level of effort | 0.88d | 2011-06-01 A | 2011-10-20 | IAFWA00104M0 | 20% | 18d | 2011-10-06 | 2011-10-06 | 18.7d | 0d | Labor General; Cost |  |  | IC | C | 05 | GEN | FA | GEN |  |  | B08 |  | TE | R00 | ACF05 | 010 | FA |  |  |  |  |  |  |  |  |  |  |  |
| I05CO04403C0 |  | IC-05 ; M2 Bracket (Common Zone) |  | 18d | 2011-09-05 A | 2011-10-18 | I05S107807C0, I05S207807C0 FF, OGNMU00039S0 | 15% | 15.3d | 2011-09-01 | 2011-09-21 | 92d | 0d | FACADE METAL PANEL 2 [585 h]; Cost | I05CO04403C0 |  | IC | C | 05 | CO | FA | 044 | 03 | BILL 8 | B08 | S2 | FM2 | R00 | ACF05 | 044 | FA |  |  |  |  |  |  |  |  |  |  |  |
| I05CO04409C0 |  | IC-05 ; M2 External Partition (Common Zone) |  | 24d | 2011-10-18 | 2011-11-19 | I05CO04403C0 |  |  |  |  | 311.7d | 29.9d | PARTITIONS [1073.21 m]; PARTITIONS [8017.1 h]; Cost | I05CO04409C0 |  | IC | C | 05 | CO | FA | 044 | 09 | BILL 8 | B08 | S2 | FM2 | R00 | ACF05 | 044 | FA |  |  |  |  |  |  |  |  |  |  |  |
| I05CO04405C0 |  | IC-05 ; Louvers Bracket (Common Zone) |  | 6d | 2011-10-22 | 2011-10-27 | I05S107807C0, I05S207807C0, I05CO04403C0 SS, I08CO04406C0 |  |  |  |  | 74d | 0d | FACADE SAND LOUVERS [114.6 h]; Cost | I05CO04405C0 |  | IC | C | 05 | CO | FA | 044 | 05 | BILL 8 | B08 | S2 | FSL | R00 | ACF05 | 044 | FA |  |  |  |  |  |  |  |  |  |  |  |
| I05SE05509C0 |  | IC-05 ; Steel Staircase & welding/bolting (Stair F5 & 6) (Zone SE) |  | 6d | 2011-10-23 | 2011-10-30 | I04SE05509C0, I05SE03305C0 |  |  |  |  | 127.31d | 0d | STRUCTURAL STEEL [7 T(Fe)]; STRUCTURAL STEEL [91 h]; Cost | IP3SE03305C0 |  | IC | C | 05 | SE | SW | 055 | 05 | BILL 8 | B08 | S2 | 01 | R00 | ACF03 | 055 | ST |  |  |  |  |  |  |  |  |  |  |  |
| I05CO04417C0 |  | IC-05 ; Louvers transom & mullion (Common Zone) |  | 12d | 2011-10-29 | 2011-11-14 | I05CO04405C0 |  |  |  |  | 74d | 0d | FACADE SAND LOUVERS [457 h]; Cost | I05CO04417C0 |  | IC | C | 05 | CO | FA | 044 | 17 | BILL 8 | B08 | S2 | FSL | R00 | ACF05 | 044 | FA |  |  |  |  |  |  |  |  |  |  |  |
| I05CO04413C0 |  | IC-05 ; Louvers installation (Common Zone) |  | 24d | 2011-11-15 | 2011-12-14 | I05CO04417C0 |  |  |  |  | 74d | 59.3d | FACADE SAND LOUVERS [2955.5 h]; FACADE SAND LOUVERS [1080 m2]; FACADE TOTAL QUANTITY m2 [1080 m2]; Cost | I05CO04413C0 |  | IC | C | 05 | CO | FA | 044 | 13 | BILL 8 | B08 | S2 | FSL | R00 | ACF05 | 044 | FA |  |  |  |  |  |  |  |  |  |  |  |
| I05CO04410C0 |  | IC-05 ; M2 Metal Panel (Common Zone) |  | 24d | 2011-12-26 | 2012-01-24 | I05CO04409C0, I05BM110B2C0 FF |  |  |  |  | 281.8d | 217.3d | FACADE METAL PANEL 2 [2346.2 h]; FACADE METAL PANEL 2 [572 m2]; FACADE TOTAL QUANTITY m2 [572 m2]; Cost | I05CO04410C0 |  | IC | C | 05 | CO | FA | 044 | 10 | BILL 8 | B08 | S2 | FM2 | R00 | ACF05 | 044 | FA |  |  |  |  |  |  |  |  |  |  |  |
| I05CO04419C0 |  | IC-05 ; Ceiling Bracket (Common Zone) |  | 9d | 2012-01-24 | 2012-02-02 | I05S107807C0, I05S207807C0, PGLS703391C0 FS+36d |  |  |  |  | 359.75d | 0d | Labor General [0.6 h]; Cost | T09CO04409C0 |  | IC | C | 05 | CO | FA | 044 | 09 | BILL 10 | B08 | S2 | PAR | R00 | ACF05 | 044 | FA |  |  |  |  |  |  |  |  |  |  |  |
| I05CO04418C0 |  | IC-05 ; Ceiling Rockwool transom & mullion (Common Zone) |  | 11.5d | 2012-02-05 | 2012-02-18 | I05CO04419C0 |  |  |  |  | 359.75d | 0d | Labor General [0.6 h]; Cost | T09CO04408C0 |  | IC | C | 05 | CO | FA | 044 | 08 | BILL 10 | B08 | S2 | PAR | R00 | ACF05 | 044 | FA |  |  |  |  |  |  |  |  |  |  |  |
| I05CO04416C0 |  | IC-05 ; Ceiling Rockwool &panel (Common Zone) |  | 9.75d | 2012-02-18 | 2012-02-29 | I05CO04418C0 |  |  |  |  | 359.75d | 356.88d | Labor General [0.6 h]; Cost | T09CO04407C0 |  | IC | C | 05 | CO | FA | 044 | 07 | BILL 10 | B08 | S2 | PAR | R00 | ACF05 | 044 | FA |  |  |  |  |  |  |  |  |  |  |  |
| I05CO04401C0 |  | IC-05 ; S1 Ex. partitions (Common Zone) |  | 26d | 2012-02-29 | 2012-03-31 | I05CO04403C0, AAFCI04401R02 FS+148d, BLZHC01588C0 |  |  |  |  | 108.75d | 0d | FACADE STONE PANEL 1 [251.3 h]; Cost | CP2CO04401C0 |  | IC | C | 05 | CO | FA | 044 | 01 | BILL 8 | B08 | S1 | FS1 | R00 | ACF05 | 044 | FA |  |  |  |  |  |  |  |  |  | 164 | 87 |
| I05CO04402C0 |  | IC-05 ; S1 onyx stone facade (Common Zone) |  | 18.03d | 2012-03-31 | 2012-04-21 | I05CO04401C0 |  |  |  |  | 207.47d | 142.97d | FACADE STONE PANEL 1 [1172.6 h]; Cost | CP2CO04411C0 |  | IC | C | 05 | CO | FA | 044 | 11 | BILL 8 | B08 | S1 | FS1 | R00 | ACF05 | 044 | FA |  |  |  |  |  |  |  |  |  | 167 | 90 |
| I05CO04455C0 |  | IC-05 ; S1 Inner Side of External Partition (Common Zone) |  | 12d | 2012-03-31 | 2012-04-14 | I05CO04401C0, I05PA09205C0 SS |  |  |  |  | 151.25d | 0d | FACADE STONE PANEL 1 [251.3 h]; Cost | DP3CO04415C0 |  | IC | C | 05 | CO | FA | 044 | 15 | BILL 5 | B08 | S1 | FS1 | R00 | ACF05 | 044 | FA |  |  |  |  |  |  |  |  |  |  |  |

| ID | WBS | Activity | Duration | Start | Finish | Predecessors | Complete | Remaining | Planned start | Planned finish | Total float | Free float | Resources | Cost | Actual cost | change id | RENZ % COMPLETE | CCAD BUILDING(SET) | CCAD PHASE(SET) | CCAD FLOOR(SET) | CCAD ZONE(SET) | CCAD WORK(SET) | CCAD SECTION(SET) | CCAD SERIAL No.(SET) | CCAD SUB ZONE MEP(SET) | CCAD CBS(SET) | CCAD BILL(SET) | CCAD HANDOVER(SET) | CCAD TAG(SET) | CCAD REV(SET) | CCADACF (SET) | CCAD CSA | CCAD SSCF | Act Selector % | Change Order # | NEW ACTIVITY ID | P_811 | P_711 | user_number8 | user_integer1 | user_integer2 | user_number7 | July2011 Target% Complete | N_% | U% | FILTER | CCAD DIVISION(SET) | CCAD MEQ |
| --- | --- | --- | --- | --- | --- | --- | --- | --- | --- | --- | --- | --- | --- | --- | --- | --- | --- | --- | --- | --- | --- | --- | --- | --- | --- | --- | --- | --- | --- | --- | --- | --- | --- | --- | --- | --- | --- | --- | --- | --- | --- | --- | --- | --- | --- | --- | --- | --- |
|  | 02 | **Public Area ( Elev.Lobby & Corridors )** |  | 2011-04-17 | 2012-12-19 |  |  |  |  |  |  |  |  |  |  |  |  |  |  |  |  |  |  |  |  |  |  |  |  |  |  |  |  |  |  |  |  |  |  |  |  |  |  |  |  |  |  |  |
| I05PA23001C0 |  | IC-05 ; 1st Fix, Inst. of Supports for MEP (Public Area) | 24d | 2011-04-17 A | 2011-05-30 A | I05S107807C0, I05S207807C0 | 100% |  | 2011-04-30 | 2011-05-28 |  |  | MECHANICAL [577.2 h]; Cost [32540.2 AED] | 32,540.18 | 32,540.18 | I05PA23001C0 | 100 | IC | C | 05 | PA | ME | 230 | 01 | 1S | BILL 8 | B08 | S2 | 1F | R00 | ACF04 | MEP | 230 | M1F |  |  |  |  |  |  |  |  |  |  |  |  |  |  |
| I05PA09201C0 |  | IC-05 ; Metal Studs (Public Area) | 45d | 2011-07-10 A | 2011-11-09 | I05PA23001C0 SS+12d, OGNMU00009S0 | 30% | 31.5d | 2011-07-02 | 2011-08-23 | 60.5d | 0d | PARTITIONS [577 h]; PARTITIONS - Metal Studs [44 m]; Cost |  |  | I05PA09201C0 |  | IC | C | 05 | PA | PT | 092 | 01 |  | BILL 8 | B08 | S2 | 1F | R00 | ACF06 | GP | 092 | PMS | 313 | 944 | 30 | 20 |  |  |  |  |  |  |  |  |  |  |
| I05PA22019C0 |  | IC-05 ; 1st Fix, Inst of Drainage pipe (ceiling) (Public Area) | 84d | 2011-07-10 A | 2012-01-25 | I05PA23001C0, I05PA26013C0 SS+14d | 30% | 58.8d | 2011-08-13 | 2011-11-24 | 25d | 0d | PLUMBING [630 h]; Cost [34080.3 AED] | 34,080.3 | 10,224.09 | I05PA22019C0 |  | IC | C | 05 | PA | ME | 220 | 19 | 1S | BILL 8 | B08 | S2 | 1F | R00 | ACF04 | MEP | 220 | M1F |  |  | 30 | 15 | 0 | 0 | 0 | 0 | 5 | 15 | 30 |  |  |  |
| I05PA21111C0 |  | IC-05 ; 1st Fix, Inst of Sprinkler main pipe (Public Area) | 72d | 2011-08-10 A | 2012-02-08 | I05PA22005C0 SS+12d, I05PA23001C0 | 20% | 57.6d | 2011-09-27 | 2011-12-25 | 25d | 0d | MECHANICAL [376.8 h]; Cost [14398.4 AED] | 14,398.38 | 2,879.68 | I05PA21111C0 |  | IC | C | 05 | PA | ME | 211 | 11 | 1S | BILL 8 | B08 | S2 | 1F | R00 | ACF04 | MEP | 211 | M1F |  |  | 20 | 0 | 0 | 0 | 0 | 0 | 10 |  | 20 |  |  |  |
| I05PA21117C0 |  | IC-05 ; 1st Fix, Inst of Sprinkler branch pipe (Public Area) | 72d | 2011-08-10 A | 2012-04-16 | I05PA09201C0, I05PA21111C0 | 20% | 57.6d | 2011-11-15 | 2012-02-11 | 65.8d | 40.8d | MECHANICAL [609.6 h]; Cost [33303.7 AED] | 33,303.68 | 6,660.74 | I05PA21117C0 |  | IC | C | 05 | PA | ME | 211 | 17 | 1S | BILL 8 | B08 | S2 | 1F | R00 | ACF04 | MEP | 211 | M1F |  |  | 20 | 0 | 0 | 0 | 0 | 0 | 10 |  | 20 | zero |  |  |
| I05PA09501C0 |  | IC-05 ; Ceiling Grid and Service Tile (Public Area) | 36d | 2011-09-05 A | 2012-06-24 | I05PA09205C0, I05PA21117C0, I05PA23008C0, I05PA23009C0, I05PA23015C0, I05PA27001C0, I05PA09901C0 | 50% | 18d | 2012-05-05 | 2012-06-14 | 25d | 0d | CEILING GRID FOR GYPSUM [5522.58 h]; CEILING GRID FOR GYPSUM [472.63 m2]; Cost |  |  | I05PA09501C0 |  | IC | C | 05 | PA | CE | 095 | 01 |  | BILL 8 | B08 | S2 | 01 | R00 | ACF06 |  | 095 |  | 323 | 952 |  |  |  |  |  |  |  |  | 50 |  |  |  |
| I05PA09503C0 |  | IC-05 ; Ceiling closure - ACT/Gypsum (Public Area) | 25d | 2011-09-05 A | 2012-10-18 | I05PA01006C0, I05PA21115C0, I05PA26005C0, I05PA27001C0, I05PA27002C0, IAFOA09509C1 FF, I05PA09701C0, I05PA23021C0, I05PA26053C0, I05PA26007C0 | 20% | 20d | 2012-10-22 | 2012-11-24 | 25d | 0d | ASSORTED CEILING FINISH [1134.67 h]; CEILING GYPSUM [154.98 h]; ASSORTED CEILING FINISH [1845 m2]; CEILING GYPSUM [473 m2]; Cost |  |  | I05PA09503C0 |  | IC | C | 05 | PA | CE | 095 | 03 |  | BILL 8 | B08 | S2 | 02 | R00 | ACF06 |  | 095 |  | 324 | 953 |  |  |  |  |  |  |  |  | 20 |  |  |  |
| I05PA26001C0 |  | IC-05 ; 1st Fix, Inst of Trunking/Conduiting (Public Area) | 54d | 2011-10-01 | 2011-12-07 | I05PA23001C0, I05S107807C0, I05S207807C0 |  |  |  |  | 25d | 0d | ELECTRICAL [2961.6 h]; Cost |  |  | I05PA26001C0 |  | IC | C | 05 | PA | ME | 260 | 01 | 1S | BILL 8 | B08 | S2 | 1F | R00 | ACF04 | MEP | 260 | M1F |  |  |  |  |  |  |  |  | 25 |  |  | zero |  |  |
| I05PA27010C0 |  | IC-05 ; 1st Fix, Inst of Trunking for ELV system (Public Area) | 48d | 2011-10-15 | 2011-12-14 | I05PA23001C0, I05PA26001C0 SS+12d, I05S107807C0, I05S207807C0 |  |  |  |  | 25d | 0d | ELECTRICAL [914.4 h]; Cost |  |  | I05PA27010C0 |  | IC | C | 05 | PA | ME | 270 | 10 | 1S | BILL 8 | B08 | S2 | 1F | R00 | ACF04 | MEP | 270 | M1F |  |  |  |  |  |  |  |  | 10 |  |  | zero |  |  |
| I05PA26013C0 |  | IC-05 ; 1st Fix, Inst of Cable Tray (Public Area) | 48d | 2011-10-26 | 2011-12-26 | I05PA23001C0, I05PA27010C0 SS+10d, I05S107807C0, I05S207807C0 |  |  |  |  | 25d | 0d | ELECTRICAL [205.2 h]; Cost |  |  | I05PA26013C0 |  | IC | C | 05 | PA | ME | 260 | 13 | 1S | BILL 8 | B08 | S2 | 1F | R00 | ACF04 | MEP | 260 | M1F |  |  |  |  |  |  |  |  | 25 |  |  | zero |  |  |
| I05PA09203C0 |  | IC-05 ; Partitions early wall & 1st face (Public Area) | 33d | 2011-11-09 | 2011-12-20 | I05PA09201C0, OGNMU00015S0 |  |  |  |  | 75.5d | 30.3d | PARTITIONS [44 m]; PARTITIONS [451 h]; Cost |  |  | I05PA09203C0 |  | IC | C | 05 | PA | PT | 092 | 03 |  | BILL 8 | B08 | S2 | 2F | R00 | ACF06 | GP | 092 | P1F | 314 | 945 |  |  |  |  |  |  |  |  |  |  |  |  |
| I05PA40302C0 |  | IC-05 ; 2nd Fix, Pneumatic tube (Public Area) | 48d | 2011-11-09 | 2012-01-08 | I05PA09201C0 |  |  |  |  | 60.5d | 7.5d | MECHANICAL [2031.6 h]; Cost |  |  | C03E140302C0 |  | IC | C | 05 | PA | ME | 403 | 02 | 2n | BILL 8 | B08 | S2 | 2F | R00 | ACF07 | MEP | 403 |  |  |  |  |  |  |  |  |  |  |  |  |  |  |  |
| I05PA22005C0 |  | IC-05 ; 1st Fix, Inst of Water supply pipe (ceiling) (Public Area) | 54d | 2011-11-15 | 2012-01-19 | I05PA22019C0 SS+7d, I05PA23001C0 |  |  |  |  | 25d | 0d | PLUMBING [1670.4 h]; Cost |  |  | I05PA22005C0 |  | IC | C | 05 | PA | ME | 220 | 05 | 1S | BILL 8 | B08 | S2 | 1F | R00 | ACF04 | MEP | 220 | M1F |  |  |  |  |  |  |  |  |  |  |  |  |  |  |
| I05PA08103C0 |  | IC-05 ; Door Frames (Public Area) | 18d | 2011-11-19 | 2011-12-11 | I05PA09201C0, IAFWA00104M0, GNHE08101C0 FS+69d |  |  |  |  | 58.75d | 0d | ASSORTED DOORS [27 h]; Cost |  |  | I05PA08103C0 |  | IC | C | 05 | PA | DO | 081 | 03 |  | BILL 8 | B08 | S2 | DF | R00 | ACF06 |  | 081 |  | 316 | 947 |  |  |  |  |  |  |  |  |  |  | 08 |  |
| I05PA22011C0 |  | IC-05 ; 2nd Fix, Drainage/Water pipe (wall) (Public Area) | 48d | 2011-11-19 | 2012-01-16 | I05PA09201C0, IAFWA00104M0 |  |  |  |  | 53d | 0d | PLUMBING [630 h]; Cost |  |  | I05PA22011C0 |  | IC | C | 05 | PA | ME | 220 | 11 | 2n | BILL 8 | B08 | S2 | 2F | R00 | ACF07 | MEP | 220 |  |  |  |  |  |  |  |  |  | 25 |  |  | zero |  |  |
| I05PA26009C0 |  | IC-05 ; 2nd Fix, Inst of Wall conduites (Public Area) | 48d | 2011-11-19 | 2012-01-16 | I05PA09201C0, IAFWA00104M0 |  |  |  |  | 53d | 0d | ELECTRICAL [397.2 h]; Cost |  |  | I05PA26009C0 |  | IC | C | 05 | PA | ME | 260 | 09 | 2n | BILL 8 | B08 | S2 | 2F | R00 | ACF07 | MEP | 260 |  |  |  |  |  |  |  |  |  | 25 |  |  | zero |  |  |
| I05PA23017C0 |  | IC-05 ; 1st Fix, Inst of CHW pipe (Public Area) | 54d | 2011-11-30 | 2012-02-02 | I05PA21111C0 SS+12d, I05PA23001C0 |  |  |  |  | 25d | 0d | MECHANICAL [2832 h]; Cost |  |  | I05PA23017C0 |  | IC | C | 05 | PA | ME | 230 | 17 | 1S | BILL 8 | B08 | S2 | 1F | R00 | ACF04 | MEP | 230 | M1F |  |  |  |  |  |  |  |  | 25 |  |  | zero |  |  |
| I05PA23023C0 |  | IC-05 ; 1st Fix, Inst of Main Ducting (Public Area) | 66d | 2011-12-10 | 2012-02-26 | I05PA23001C0, I05PA23017C0 SS+7d |  |  |  |  | 54d | 0d | MECHANICAL [7574.4 h]; Cost |  |  | I05PA23023C0 |  | IC | C | 05 | PA | ME | 230 | 23 | 1S | BILL 8 | B08 | S2 | 1F | R00 | ACF04 | MEP | 230 | M1F |  |  |  |  |  |  |  |  | 25 |  |  | zero |  |  |
| I05PA27001C0 |  | IC-05 ; 1st Fix, Wiring/ Cabling work (Public Area) | 48d | 2011-12-27 | 2012-02-22 | I05PA26001C0, I05PA26013C0, I05PA27010C0 |  |  |  |  | 111d | 86d | ELECTRICAL [213.6 h]; Cost |  |  | I05PA27001C0 |  | IC | C | 05 | PA | ME | 270 | 01 | 1S | BILL 8 | B08 | S2 | 1F | R00 | ACF04 | MEP | 270 | M1F |  |  |  |  |  |  |  |  | 5 |  |  | zero |  |  |
| I05PA01005C0 |  | IC-05 ; 2nd, Wall Inspection by Consultant (Public Area) | 0d | 2012-01-17 | 2012-01-17 | I05PA22011C0, I05PA26009C0, I05PA40302C0 |  |  |  |  | 53d | 7.8d | Cost |  |  | I05PA01005C0 |  | IC | C | 05 | PA | ME | 010 | 05 | 2n | BILL 8 | B08 | S2 | WI | R00 | ACF07 | MEP | 010 |  |  |  |  |  |  |  |  |  |  |  |  |  |  |  |
| I05PA09205C0 |  | IC-05 ; Partitions Closing (Public Area) | 36d | 2012-01-25 | 2012-03-08 | I05PA01005C0, I05PA09203C0, I05PA22005C0, I05PA22019C0, IAFOA09210C1 FF, I05PA08103C0 FF |  |  |  |  | 45.2d | 0d | PARTITIONS [44 m]; PARTITIONS [579 h]; Cost |  |  | I05PA09205C0 |  | IC | C | 05 | PA | PT | 092 | 05 |  | BILL 8 | B08 | S2 | FF | R00 | ACF06 | GP | 092 | P2F | 315 | 946 |  |  |  |  |  |  |  |  |  |  |  |  |
| I05PA23009C0 |  | IC-05 ; 2nd Fix, Inst of VAV'S CHW connection (Public Area) | 48d | 2012-02-05 | 2012-03-31 | I05PA23017C0 |  |  |  |  | 25d | 0d | MECHANICAL [901.2 h]; Cost |  |  | I05PA23009C0 |  | IC | C | 05 | PA | ME | 230 | 09 | 2n | BILL 8 | B08 | S2 | 2F | R00 | ACF07 | MEP | 230 |  |  |  |  |  |  |  |  |  |  |  |  |  |  |  |
| I05PA23008C0 |  | IC-05 ; 1st Fix, Inst of VCD's/FD's (Public Area) | 48d | 2012-02-27 | 2012-04-22 | I05PA23023C0 |  |  |  |  | 60d | 35d | MECHANICAL [910.8 h]; Cost |  |  | I05PA23008C0 |  | IC | C | 05 | PA | ME | 230 | 08 | 1S | BILL 8 | B08 | S2 | 1F | R00 | ACF04 | MEP | 230 | M1F |  |  |  |  |  |  |  |  |  |  |  |  |  |  |
| I05PA09901C0 |  | IC-05 ; Wall Prime & 1st coat (Public Area) | 24d | 2012-03-08 | 2012-04-05 | I04SE05509C0, I05PA09205C0 |  |  |  |  | 74.2d | 0d | WALL PAINT [111 h]; WALL PAINT [137 m2]; Cost |  |  | I05PA09901C0 |  | IC | C | 05 | PA | PA | 099 | 01 |  | BILL 8 | B08 | S2 | 01 | R00 | ACF06 |  | 099 |  | 328 | 956 |  |  |  |  |  |  |  |  |  |  |  |  |
| I05PA26005C0 |  | IC-05 ; 2nd Fix, Wiring for Power/Lighting/Emergency (Public Area) | 48d | 2012-03-08 | 2012-05-03 | I05PA09205C0 |  |  |  |  | 110.2d | 0d | ELECTRICAL [213.6 h]; Cost |  |  | I05PA26005C0 |  | IC | C | 05 | PA | ME | 260 | 05 | 2n | BILL 8 | B08 | S2 | 2F | R00 | ACF07 | MEP | 260 |  |  |  |  |  |  |  |  |  |  |  |  |  |  |  |
| I05PA26007C0 |  | IC-05 ; 2nd Fix, Cable Pulling (Public Area) | 48d | 2012-03-08 | 2012-05-03 | I05PA09201C0 SS+6d, IAFWA00104M0, I05PA09205C0 |  |  |  |  | 146.2d | 121.2d | ELECTRICAL [2858.4 h]; Cost |  |  | I05PA26007C0 |  | IC | C | 05 | PA | ME | 260 | 07 | 2n | BILL 8 | B08 | S2 | 2F | R00 | ACF07 | MEP | 260 |  |  |  |  |  |  |  |  |  | 20 |  |  | zero |  |  |
| I05PA26011C0 |  | IC-05 ; 2nd Fix, Inst of Equipment (DB) (Public Area) | 66d | 2012-03-08 | 2012-05-24 | I05PA09205C0 |  |  |  |  | 92.2d | 67.2d | ELECTRICAL [1736.4 h]; Cost |  |  | I05PA26011C0 |  | IC | C | 05 | PA | ME | 260 | 11 | 2n | BILL 8 | B08 | S2 | 2F | R00 | ACF04 | MEP | 260 |  |  |  |  |  |  |  |  |  |  |  |  |  |  | E |
| I05PA26053C0 |  | IC-05 ; 2nd Fix, Wiring / Cabling (Public Area) | 48d | 2012-03-08 | 2012-05-03 | I05PA09203C0, I05PA09205C0 |  |  |  |  | 146.2d | 121.2d | ELECTRICAL [213.6 h]; Cost |  |  | I05PA26053C0 |  | IC | C | 05 | PA | ME | 260 | 53 | 2n | BILL 8 | B08 | S2 | 2F | R00 | ACF07 | MEP | 260 |  | 389 | 977 |  |  |  |  |  |  |  |  |  |  |  |  |
| I05PA27020C0 |  | IC-05 ; 2nd Fix, Inst of ELV Equipment (Panels) (Public Area) | 60d | 2012-03-08 | 2012-05-17 | I05PA09205C0 |  |  |  |  | 98.2d | 73.2d | ELECTRICAL [1041.6 h]; Cost |  |  | I05PA27020C0 |  | IC | C | 05 | PA | ME | 270 | 20 | 2n | BILL 8 | B08 | S2 | 2F | R00 | ACF04 | MEP | 270 |  |  |  |  |  |  |  |  |  |  |  |  |  |  | E |
| I05PA23015C0 |  | IC-05 ; 2nd Fix, Insulation of CHW pipe & Duct (Public Area) | 54d | 2012-04-01 | 2012-06-02 | I05PA23009C0, I05PA23017C0, I05PA23023C0 |  |  |  |  | 25d | 0d | MECHANICAL [3075.6 h]; Cost |  |  | I05PA23015C0 |  | IC | C | 05 | PA | ME | 230 | 15 | 2n | BILL 8 | B08 | S2 | 2F | R00 | ACF07 | MEP | 230 |  |  |  |  |  |  |  |  |  |  |  |  |  |  |  |
| I05PA05501C0 |  | IC-05 ; Handrails & balustrade (Public Area) | 36d | 2012-04-05 | 2012-05-17 | I05PA09901C0 |  |  |  |  | 98.2d | 73.2d | SECONDARY STEEL [84 h]; Cost |  |  | I05PA05501C0 |  | IC | C | 05 | PA | SW | 055 | 01 |  | BILL 8 | B08 | S2 | 01 | R00 | ACF03 |  | a |  |  |  |  |  |  |  |  |  |  |  |  |  |  |  |
| I05PA26015C0 |  | IC-05 ; Final Fix, Termination & Gladding of Cables (Public Area) | 36d | 2012-05-03 | 2012-06-14 | I05PA26005C0 |  |  |  |  | 110.2d | 67.2d | ELECTRICAL [158.4 h]; Cost |  |  | I05PA26015C0 |  | IC | C | 05 | PA | ME | 260 | 15 | FF | BILL 8 | B08 | S2 | FF | R00 | ACF07 | MEP | 260 |  |  |  |  |  |  |  |  |  |  |  |  |  |  |  |
| I05PA09601C0 |  | IC-05 ; Flooring (Rubber, etc) (Public Area) | 42d | 2012-06-25 | 2012-08-12 | OGNMU00055S0, I05PA09501C0, I05PA05501C0 FF |  |  |  |  | 25d | 0d | RUBBER FLOOR [72 h]; RUBBER FLOOR [173 m2]; Cost |  |  | I05PA09601C0 |  | IC | C | 05 | PA | FF | 096 | 01 |  | BILL 8 | B08 | S2 | 03 | R00 | ACF06 |  | RF |  | 326 | 955 |  |  |  |  |  |  |  |  |  |  |  |  |
| I05PA09903C0 |  | IC-05 ; Wall Final Paint (Public Area) | 24d | 2012-06-25 | 2012-07-22 | I05PA09901C0, I05PA09905C0, I05PA09501C0 |  |  |  |  | 129d | 78d | WALL PAINT [60 h]; WALL PAINT [74 m2]; Cost |  |  | I05PA09903C0 |  | IC | C | 05 | PA | PA | 099 | 03 |  | BILL 8 | B08 | S2 | 02 | R00 | ACF06 |  | 099 |  | 329 | 957 |  |  |  |  |  |  |  |  |  |  |  |  |
| I05PA09905C0 |  | IC-05 ; Ceiling Prime & 1st coat (Public Area) | 0d | 2012-06-25 | 2012-06-25 | I05PA09501C0 |  |  |  |  | 129d | 0d | Cost |  |  | I05PA09905C0 |  | IC | C | 05 | PA | PA | 099 | 05 |  | BILL 8 | B08 | S2 | 01 | R00 | ACF06 |  | 099 |  | 330 | 958 |  |  |  |  |  |  |  |  |  |  |  |  |
| I05PA21115C0 |  | IC-05 ; 2nd Fix, Inst of Sprinkler droppers (Public Area) | 48d | 2012-06-25 | 2012-08-21 | I05PA09501C0 |  |  |  |  | 55d | 0d | MECHANICAL [800.4 h]; Cost |  |  | I05PA21115C0 |  | IC | C | 05 | PA | ME | 211 | 15 | 2n | BILL 8 | B08 | S2 | 2F | R00 | ACF07 | MEP | 211 |  |  |  |  |  |  |  |  |  |  |  |  |  |  |  |
| I05PA23021C0 |  | IC-05 ; 2nd Fix, Inst of Flexible Duct & Plenum boxes (Public Area) | 48d | 2012-06-25 | 2012-08-21 | I05PA09205C0, I05PA09501C0 |  |  |  |  | 55d | 0d | MECHANICAL [72 h]; Cost |  |  | I05PA23021C0 |  | IC | C | 05 | PA | ME | 230 | 21 | 2n | BILL 8 | B08 | S2 | 2F | R00 | ACF07 | MEP | 230 |  |  |  |  |  |  |  |  |  |  |  |  |  |  |  |
| I05PA26017C0 |  | IC-05 ; Final Fix, Inst of Ceiling rose (Public Area) | 36d | 2012-06-25 | 2012-08-05 | I05PA09501C0 |  |  |  |  | 43d | 0d | ELECTRICAL [33.6 h]; Cost |  |  | I05PA26017C0 |  | IC | C | 05 | PA | ME | 260 | 17 | FF | BILL 8 | B08 | S2 | FF | R00 | ACF07 | MEP | 260 |  |  |  |  |  |  |  |  |  |  |  |  |  |  |  |
| I05PA27002C0 |  | IC-05 ; 2nd Fix, Wiring Droppers (Public Area) | 48d | 2012-06-25 | 2012-08-21 | I05PA09501C0 |  |  |  |  | 49d | 0d | ELECTRICAL [213.6 h]; Cost |  |  | I05PA27002C0 |  | IC | C | 05 | PA | ME | 270 | 02 | 2n | BILL 8 | B08 | S2 | 2F | R00 | ACF07 | MEP | 270 |  |  |  |  |  |  |  |  |  |  |  |  |  |  |  |
| I05PA40303C0 |  | IC-05 ; Final Fix, Pneumatic Station (Public Area) | 48d | 2012-06-25 | 2012-08-21 | I05PA09501C0 |  |  |  |  | 55d | 12d | MECHANICAL [2031.6 h]; Cost |  |  | C03E140303C0 |  | IC | C | 05 | PA | ME | 403 | 03 | FF | BILL 8 | B08 | S2 | FF | R00 | ACF07 | MEP | 403 |  |  |  |  |  |  |  |  |  |  |  |  |  |  |  |
| I05PA21113C0 |  | IC-05 ; Final Fix, Inst of Sprinklers head/ Extinguisher (Public Area) | 36d | 2012-07-02 | 2012-08-12 | I05PA09501C0, I05PA21115C0 SS+6d |  |  |  |  | 61d | 18d | MECHANICAL [152.4 h]; Cost |  |  | I05PA21113C0 |  | IC | C | 05 | PA | ME | 211 | 13 | FF | BILL 8 | B08 | S2 | FF | R00 | ACF07 | MEP | 211 |  |  |  |  |  |  |  |  |  |  |  |  |  |  |  |
| I05PA23019C0 |  | IC-05 ; Final Fix, Inst of Grilles & Diffusers (Public Area) | 36d | 2012-07-02 | 2012-08-12 | I05PA09501C0, I05PA23021C0 SS+6d |  |  |  |  | 61d | 18d | MECHANICAL [757.2 h]; Cost |  |  | I05PA23019C0 |  | IC | C | 05 | PA | ME | 230 | 19 | FF | BILL 8 | B08 | S2 | FF | R00 | ACF07 | MEP | 230 |  |  |  |  |  |  |  |  |  |  |  |  |  |  |  |
| I05PA26003C0 |  | IC-05 ; Final Fix, Inst of Light fittings (Public Area) | 54d | 2012-07-02 | 2012-09-04 | I05PA09501C0, I05PA26017C0 SS+6d |  |  |  |  | 43d | 0d | ELECTRICAL [9577.2 h]; Cost |  |  | I05PA26003C0 |  | IC | C | 05 | PA | ME | 260 | 03 | FF | BILL 8 | B08 | S2 | FF | R00 | ACF07 | MEP | 260 |  |  |  |  |  |  |  |  |  |  |  |  |  |  |  |
| I05PA27030C0 |  | IC-05 ; Final Fix, Inst of ELV device (Detector/Speaker) (Public Area) | 48d | 2012-07-02 | 2012-08-28 | I05PA09501C0, I05PA27002C0 SS+6d |  |  |  |  | 49d | 6d | ELECTRICAL [1707.6 h]; Cost |  |  | I05PA27030C0 |  | IC | C | 05 | PA | ME | 270 | 30 | FF | BILL 8 | B08 | S2 | FF | R00 | ACF07 | MEP | 270 |  |  |  |  |  |  |  |  |  |  |  |  |  |  |  |
| I05PA08107C0 |  | IC-05 ; Doors (Public Area) | 18.88d | 2012-08-13 | 2012-09-05 | I05PA08103C0, I05PA09501C0, I05PA09601C0, I05PA09901C0 |  |  |  |  | 77.12d | 0d | ASSORTED DOORS [100 h]; ASSORTED DOORS [10 no]; Cost |  |  | I05PA08107C0 |  | IC | C | 05 | PA | DO | 081 | 07 |  | BILL 8 | B08 | S2 | DR | R00 | ACF06 |  | 081 |  | 317 | 948 |  |  |  |  |  |  |  |  |  |  | 08 |  |
| I05PA09701C0 |  | IC-05 ; Wall finishes (ST, WD, WC) (Public Area) | 36d | 2012-08-13 | 2012-09-25 | I05PA26011C0, I05PA27020C0, OGNMU00051S0, TVT0114211C0, TVT0214211C0, TVT1214211C0, I05PA09601C0 |  |  |  |  | 25d | 0d | ASSORTED WALL FINISH [600 h]; ASSORTED WALL FINISH [690 m2]; Cost |  |  | I05PA09701C0 |  | IC | C | 05 | PA | WF | 097 | 01 |  | BILL 8 | B08 | S2 | 01 | R00 | ACF06 |  | 097 |  | 105 | 1002 |  |  |  |  |  |  |  |  |  |  |  |  |
| I05PA01006C0 |  | IC-05 ; 2nd, Ceiling Inspection by Consultants (Public Area) | 0d | 2012-09-05 | 2012-09-05 | I05PA21115C0, I05PA23009C0, I05PA23015C0, I05PA27002C0, I05PA09501C0, I05PA21113C0, I05PA23019C0, I05PA26003C0, I05PA26017C0, I05PA27030C0, I05PA40303C0, I05PA26015C0 |  |  |  |  | 43d | 18d | Cost |  |  | I05PA01006C0 |  | IC | C | 05 | PA | ME | 010 | 06 | 2n | BILL 8 | B08 | S2 | CI | R00 | ACF07 | MEP | 010 |  |  |  |  |  |  |  |  |  |  |  |  |  |  |  |
| I05PA08709C0 |  | IC-05 ; Ironmongery (Public Area) | 15d | 2012-09-05 | 2012-09-23 | I05PA08107C0 |  |  |  |  | 77.12d | 52.12d | IRONMONGERY [50 h]; IRONMONGERY [5 no]; Cost |  |  | I05PA08709C0 |  | IC | C | 05 | PA | DO | 087 | 09 |  | BILL 8 | B08 | S2 | IM | R00 | ACF06 |  | 087 |  | 322 | 951 |  |  |  |  |  |  |  |  |  |  | 08 |  |
| I05PA11001C0 |  | IC-05 ; Wall Protection (WP, CG, WG, FCG) (Public Area) | 24d | 2012-09-26 | 2012-10-23 | I05PA09701C0, I05PA09903C0 SS, OGNMU00063S0 |  |  |  |  | 51d | 26d | FF&E [7 h]; Cost |  |  | I05PA11001C0 |  | IC | C | 05 | PA | WF | 110 | 01 |  | BILL 8 | B08 | S2 | 03 | R00 | ACF08 |  | b |  | 326 | 1001 |  |  |  |  |  |  |  |  |  |  |  |  |
| I05PA11009C0 |  | IC-05 ; Signage (Public Area) | 14d | 2012-09-26 | 2012-10-11 | I05PA09701C0, OGNMU00071S0 |  |  |  |  | 61d | 36d | SIGNAGES [68 h]; SIGNAGES [68.14 no]; Cost |  |  | I05PA11009C0 |  | IC | C | 05 | PA | SA | 110 | 09 |  | BILL 8 | B08 | S2 | 09 | R00 | ACF08 |  | c |  | 322 | 951 |  |  |  |  |  |  |  |  |  |  | 08 |  |
| I05PA09907C0 |  | IC-05 ; Ceiling Final paint (Public Area) | 0d | 2012-10-20 | 2012-10-20 | I05PA09601C0, I05PA09905C0, I05PA09503C0 |  |  |  |  | 55d | 30d | Cost |  |  | I05PA09907C0 |  | IC | C | 05 | PA | PA | 099 | 07 |  | BILL 8 | B08 | S2 | 02 | R00 | ACF06 |  | 099 |  | 331 | 959 |  |  |  |  |  |  |  |  |  |  |  |  |
| I05PA26019C0 |  | IC-05 ; Final Fix, Inst of Switch/Sockets (Public Area) | 18d | 2012-10-20 | 2012-11-11 | I05PA09901C0, I05PA09503C0 |  |  |  |  | 25d | 0d | ELECTRICAL [164.4 h]; Cost |  |  | I05PA26019C0 |  | IC | C | 05 | PA | ME | 260 | 19 | FF | BILL 8 | B08 | S2 | FF | R00 | ACF07 | MEP | 260 |  |  |  |  |  |  |  |  |  |  |  |  |  |  |  |

| ID | WBS | Activity | Duration | Start | Finish | Predecessors | Complete | Remaining | Planned start | Planned finish | Total float | Free float | Resources | Cost | Actual cost | change id | CCAD BUILDING(SET) | CCAD PHASE(SET) | CCAD FLOOR(SET) | CCAD ZONE(SET) | CCAD WORK(SET) | CCAD SECTION(SET) | CCAD SERIAL No.(SET) | CCAD CBS(SET) | CCAD BILL(SET) | CCAD HANDOVER(SET) | CCAD TAG(SET) | CCAD REV(SET) | CCADACF (SET) | CCAD SSCF | RENZ % COMPLETE | CCAD SUB ZONE MEP(SET) | CCAD CSA | Act Selector % | P_811 | P_711 | user_number8 | user_integer1 | user_integer2 | user_number7 | July2011 Target% Complete | N_% | U% | FILTER | CCAD MEQ | Change Order # | NEW ACTIVITY ID | CCAD DIVISION(SET) |
| --- | --- | --- | --- | --- | --- | --- | --- | --- | --- | --- | --- | --- | --- | --- | --- | --- | --- | --- | --- | --- | --- | --- | --- | --- | --- | --- | --- | --- | --- | --- | --- | --- | --- | --- | --- | --- | --- | --- | --- | --- | --- | --- | --- | --- | --- | --- | --- | --- |
|  | 10 | **Precommissioning Tesing & snagging (Public Area)** |  | 2012-11-12 | 2012-12-19 |  |  |  |  |  |  |  |  |  |  |  |  |  |  |  |  |  |  |  |  |  |  |  |  |  |  |  |  |  |  |  |  |  |  |  |  |  |  |  |  |  |  |  |
| I05TS01801C0 |  | IC-05 ; MEP de-snag, FIREM sign-off | 12d | 2012-11-12 | 2012-11-26 | I05PA26015C0, I05PA21113C0, I05PA23019C0, I05PA26017C0, I05PA26003C0, I05PA27030C0, I05PA40303C0, I05PA26019C0 |  |  |  |  | 25d | 0d | TESTING & COMMISSIONING [2040 h]; Cost |  |  | I05TS01801C0 | IC | C | 05 | TS | SC | 018 | 01 | BILL 8 | B08 | S2 | 01 | R00 | ACF07 | 018 |  |  |  |  |  |  |  |  |  |  |  |  |  |  |  |  |  |  |
| I05TS01806C0 |  | IC-05 ; Touch-up & Clean / JV inspection /CIR /De-snag | 18d | 2012-11-27 | 2012-12-18 | I05CO04402C0, I05CO04403C0, I05CO04405C0, I05CO04410C0, I05CO04413C0, I05CO04417C0, I05PA05501C0, I05PA08103C0, I05PA08107C0, I05PA08709C0, I05PA09203C0, I05PA09205C0, I05PA09501C0, I05PA09503C0, I05PA09601C0, I05PA09701C0, I05PA09901C0, I05PA09903C0, I05PA09905C0, I05PA09907C0, I05PA11001C0, I05PA11009C0, I05PA21113C0, I05PA23019C0, I05PA26003C0, I05PA26015C0, I05PA26017C0, I05PA26019C0, I05PA27030C0, I05PA40303C0, I05TS01801C0 |  |  |  |  | 25d | 0d | TESTING & COMMISSIONING [128 h]; Cost |  |  | I05TS01802C0 | IC | C | 05 | TS | SC | 018 | 02 | BILL 8 | B08 | S2 | 02 | R00 | ACF07 | 018 |  |  |  |  |  |  |  |  |  |  |  |  |  |  |  |  |  |  |
| I05TS01809C0 |  | IC-05 ; Consultant's final de-snag inspection | 0d | 2012-12-19 | 2012-12-19 | I05TS01806C0, I05TS01811C0 |  |  |  |  | 25d | 4d | Cost |  |  | I05TS01803C0 | IC | C | 05 | TS | SC | 018 | 03 | BILL 8 | B08 | S2 | 03 | R00 | ACF07 | 018 |  |  |  |  |  |  |  |  |  |  |  |  |  |  |  |  |  |  |
|  | 03 | **Mech-1** |  | 2011-05-11 | 2012-10-30 |  |  |  |  |  |  |  |  |  |  |  |  |  |  |  |  |  |  |  |  |  |  |  |  |  |  |  |  |  |  |  |  |  |  |  |  |  |  |  |  |  |  |  |
| I05M123001C0 |  | IC-05 ; 1st Fix, Inst. of Supports for MEP (Mech RM) | 29d | 2011-05-11 A | 2011-05-25 A | I05S107807C0 | 100% |  | 2011-06-13 | 2011-07-18 |  |  | MECHANICAL [577.2 h]; Cost [32540.2 AED] | 32,540.18 | 32,540.18 | I05ME23001C0 | IC | C | 05 | M1 | ME | 230 | 01 | BILL 8 | B08 | S2 | 1F | R00 | ACF04 | 230 | 100 | 1S | MEP | M1F |  |  |  |  |  |  |  |  |  |  |  |  |  |  |
| I05M109201C0 |  | IC-05 ; Metal Studs (Mech RM) | 45d | 2011-07-10 A | 2011-11-09 | I05M123001C0 | 30% | 31.5d | 2011-07-16 | 2011-09-08 | 62.23d | 0d | PARTITIONS [3609 h]; PARTITIONS - Metal Studs [277 m]; Cost |  |  | I05ME09201C0 | IC | C | 05 | M1 | PT | 092 | 01 | BILL 8 | B08 | S2 | 1F | R00 | ACF06 | 092 |  |  | GP | PMS | 30 | 20 |  |  |  |  |  |  |  |  |  |  |  |  |
| I05M122011C0 |  | IC-05 ; 1st Fix, Inst of Drainage pipe (Mech RM) | 84d | 2011-07-10 A | 2011-12-13 | I05M123001C0, I05M126001C0 SS+14d | 30% | 58.8d | 2011-07-17 | 2011-10-24 | 67.92d | 0d | PLUMBING [630 h]; Cost [34080.3 AED] | 34,080.3 | 10,224.09 | I05ME22011C0 | IC | C | 05 | M1 | ME | 220 | 11 | BILL 8 | B08 | S2 | 1F | R00 | ACF04 | 220 |  | 1S | MEP | M1F | 30 | 15 | 0 | 0 | 0 | 0 | 20 | 15 | 30 |  |  |  |  |  |
| I05M121111C0 |  | IC-05 ; 1st Fix, Inst of Sprinkler main pipe (Mech RM) | 72d | 2011-08-10 A | 2011-12-26 | I05M122006C0 SS+12d, I05M123001C0 | 20% | 57.6d | 2011-09-01 | 2011-11-28 | 144.75d | 0d | MECHANICAL [264 h]; Cost [14398.4 AED] | 14,398.38 | 2,879.68 | I05ME21111C0 | IC | C | 05 | M1 | ME | 211 | 11 | BILL 8 | B08 | S2 | 1F | R00 | ACF04 | 211 |  | 1S | MEP | M1F | 20 | 0 | 0 | 0 | 0 | 0 | 20 |  | 20 | zero |  |  |  |  |
| I05M121119C0 |  | IC-05 ; 1st Fix, Inst of Sprinkler branch pipe (Mech RM) | 72d | 2011-08-10 A | 2012-03-05 | I05M121111C0 | 20% | 57.6d | 2011-11-24 | 2012-02-20 | 155.55d | 0d | MECHANICAL [609.6 h]; Cost [33303.7 AED] | 33,303.68 | 6,660.74 | I05ME21119C0 | IC | C | 05 | M1 | ME | 211 | 19 | BILL 8 | B08 | S2 | 1F | R00 | ACF04 | 211 |  | 1S | MEP | M1F | 20 | 0 | 0 | 0 | 0 | 0 |  |  | 20 |  |  |  |  |  |
| I05M123013C0 |  | IC-05 ; 2nd Fix, Inst of Equipment (AHU) (Mech RM) | 90d | 2011-09-05 A | 2011-12-24 | I05M109201C0 SS, I05S107807C0, I05S207807C0 | 25% | 67.5d | 2011-09-01 | 2011-12-20 | 95.25d | 0d | MECHANICAL [14275.2 h]; Cost [3248518 AED] | 3,248,518 | 812,129.5 | I05ME23013C0 | IC | C | 05 | M1 | ME | 230 | 13 | BILL 8 | B08 | S2 | 2F | R00 | ACF04 | 230 |  | 2n | MEP |  |  |  |  |  |  |  | 100 |  | 0 |  | H |  |  |  |
| I05M126001C0 |  | IC-05 ; 1st Fix, Inst of Trunking/Conduiting (Mech RM) | 48d | 2011-09-05 A | 2011-11-23 | I05M123001C0 | 10% | 43.2d | 2011-09-01 | 2011-10-26 | 67.92d | 0d | ELECTRICAL [397.2 h]; Cost [20466.7 AED] | 20,466.68 | 2,046.67 | I05ME26001C0 | IC | C | 05 | M1 | ME | 260 | 01 | BILL 8 | B08 | S2 | 1F | R00 | ACF04 | 260 |  | 1S | MEP | M1F |  |  |  |  |  |  | 20 |  |  | zero |  |  |  |  |
| I05M122006C0 |  | IC-05 ; 1st Fix, Inst of Water supply pipe (Mech RM) | 54d | 2011-10-01 | 2011-12-07 | I05M122011C0 SS+10d, I05M123001C0 |  |  |  |  | 101.72d | 0d | PLUMBING [1670.4 h]; Cost |  |  | I05ME22006C0 | IC | C | 05 | M1 | ME | 220 | 06 | BILL 8 | B08 | S2 | 1F | R00 | ACF04 | 220 |  | 1S | MEP | M1F |  |  |  |  |  |  | 20 |  |  | zero |  |  |  |  |
| I05M123019C0 |  | IC-05 ; 1st Fix, Inst of CHW pipe (Mech RM) | 54d | 2011-10-15 | 2011-12-21 | I05M121111C0 SS+10d, I05M123001C0 |  |  |  |  | 144.75d | 1.5d | MECHANICAL [2832 h]; Cost |  |  | I05ME23019C0 | IC | C | 05 | M1 | ME | 230 | 19 | BILL 8 | B08 | S2 | 1F | R00 | ACF04 | 230 |  | 1S | MEP | M1F |  |  |  |  |  |  |  |  |  |  |  |  |  |  |
| I05M109203C0 |  | IC-05 ; Partitions 1st face (Mech RM) | 33d | 2011-11-09 | 2011-12-20 | I05M109201C0 |  |  |  |  | 62.23d | 0d | PARTITIONS [277 m]; PARTITIONS [2805 h]; Cost |  |  | I05ME09203C0 | IC | C | 05 | M1 | PT | 092 | 03 | BILL 8 | B08 | S2 | 2F | R00 | ACF06 | 092 |  |  | GP | P1F |  |  |  |  |  |  |  |  |  |  |  | 314 | 1463 |  |
| I05M123005C0 |  | IC-05 ; 1st Fix, Inst of Ducting (Mech RM) | 66d | 2011-11-09 | 2012-01-29 | I05M123001C0, I05M123013C0 SS+12d, I05M109201C0 |  |  |  |  | 65.25d | 0d | MECHANICAL [7574.4 h]; Cost |  |  | I05ME23005C0 | IC | C | 05 | M1 | ME | 230 | 05 | BILL 8 | B08 | S2 | 1F | R00 | ACF04 | 230 |  | 1S | MEP | M1F |  |  |  |  |  |  | 25 |  |  | zero |  |  |  |  |
| I05M108101C0 |  | IC-05 ; Metal Door Frames (Mech RM) | 24d | 2011-11-22 | 2011-12-21 | I05M109201C0, GNHE08101C0 FS+69d, I05PA08103C0 SS+3d |  |  |  |  | 58.75d | 0d | METAL DOORS [149 h]; Cost |  |  | I05ME08101C0 | IC | C | 05 | M1 | DO | 081 | 01 | BILL 8 | B08 | S2 | DF | R00 | ACF06 | 081 |  |  |  |  |  |  |  |  |  |  |  |  |  |  |  | 316 | 1465 | 08 |
| I05M109205C0 |  | IC-05 ; Partitions Closing (Mech RM) | 36.02d | 2011-12-20 | 2012-02-01 | I05M109201C0, I05M109203C0, I05M122006C0 SS+25d, I05M122011C0, IAFOA09210C1 FF, I05M108101C0 FF |  |  |  |  | 62.23d | 0d | PARTITIONS [277 m]; PARTITIONS [3599 h]; Cost |  |  | I05ME09205C0 | IC | C | 05 | M1 | PT | 092 | 05 | BILL 8 | B08 | S2 | FF | R00 | ACF06 | 092 |  |  | GP | P2F |  |  |  |  |  |  |  |  |  |  |  | 315 | 1464 |  |
| I05M107101C0 |  | IC-05 ; Waterproofing (Mech RM) | 15d | 2011-12-24 | 2012-01-11 | I05M123013C0 |  |  |  |  | 235.25d | 18.02d | THERMAL & MOISTURE [1168 h]; THERMAL & MOISTURE [7748 m2]; Cost |  |  | I05ME09901C0 | IC | C | 05 | M1 | FF | 071 | 01 | BILL 8 | B08 | S2 | 01 | R00 | ACF03 | 071 |  |  |  |  |  |  |  |  |  |  |  |  |  |  |  | 328 | 1469 |  |
| I05M121117C0 |  | IC-05 ; 2nd Fix, Inst of Zone Control Valve (Mech RM) | 48d | 2011-12-24 | 2012-02-20 | I05M123013C0, I05M123019C0 |  |  |  |  | 143.25d | 78d | MECHANICAL [379.2 h]; Cost |  |  | I05ME21117C0 | IC | C | 05 | M1 | ME | 211 | 17 | BILL 8 | B08 | S2 | 2F | R00 | ACF07 | 211 |  | 2n | MEP |  |  |  |  |  |  |  |  |  |  |  |  |  |  |  |
| I05M126011C0 |  | IC-05 ; 1st Fix, Inst of Cable Tray (Mech RM) | 48d | 2011-12-24 | 2012-02-20 | I05M123013C0 |  |  |  |  | 95.25d | 0d | ELECTRICAL [205.2 h]; Cost |  |  | I05ME26011C0 | IC | C | 05 | M1 | ME | 260 | 11 | BILL 8 | B08 | S2 | 1F | R00 | ACF04 | 260 |  | 1S | MEP | M1F |  |  |  |  |  |  |  |  |  |  |  |  |  |  |
| I05M127020C0 |  | IC-05 ; 2nd Fix, Inst of ELV Equipment (Panels) (Mech RM) | 60d | 2011-12-24 | 2012-03-05 | I05M123013C0 |  |  |  |  | 131.25d | 66d | ELECTRICAL [1041.6 h]; Cost |  |  | I05ME27020C0 | IC | C | 05 | M1 | ME | 270 | 20 | BILL 8 | B08 | S2 | 2F | R00 | ACF04 | 270 |  | 2n | MEP |  |  |  |  |  |  |  |  |  |  |  | E |  |  |  |
| I05M123015C0 |  | IC-05 ; 2nd Fix, Inst of VCD's/FD's (Mech RM) | 48d | 2012-01-29 | 2012-03-26 | I05M123005C0 |  |  |  |  | 113.25d | 6d | MECHANICAL [910.8 h]; Cost |  |  | I05ME23015C0 | IC | C | 05 | M1 | ME | 230 | 15 | BILL 8 | B08 | S2 | 2F | R00 | ACF07 | 230 |  | 2n | MEP |  |  |  |  |  |  |  |  |  |  |  |  |  |  |  |
| I05M123017C0 |  | IC-05 ; 2nd Fix, Insulation of CHW pipe & Duct (Mech RM) | 54d | 2012-01-29 | 2012-04-02 | I05M123005C0, I05M123019C0 |  |  |  |  | 143.25d | 0d | MECHANICAL [3075.6 h]; Cost |  |  | I05ME23017C0 | IC | C | 05 | M1 | ME | 230 | 17 | BILL 8 | B08 | S2 | 2F | R00 | ACF07 | 230 |  | 2n | MEP |  |  |  |  |  |  |  |  |  |  |  |  |  |  |  |
| I05M127010C0 |  | IC-05 ; 1st Fix, Inst of Trunking for ELV system (Mech RM) | 48d | 2012-01-29 | 2012-03-26 | I05M123005C0 |  |  |  |  | 65.25d | 0d | ELECTRICAL [914.4 h]; Cost |  |  | I05ME27010C0 | IC | C | 05 | M1 | ME | 270 | 10 | BILL 8 | B08 | S2 | 1F | R00 | ACF04 | 270 |  | 1S | MEP | M1F |  |  |  |  |  |  |  |  |  |  |  |  |  |  |
| I05M109601C0 |  | IC-05 ; Floor Finishes (Mech RM) | 18d | 2012-02-01 | 2012-02-23 | I05M107101C0, I05M109205C0 |  |  |  |  | 217.22d | 0d | ASSORTED FLOOR FINISH [1936 h]; ASSORTED FLOOR FINISH [1075 m2]; Cost |  |  | I05ME09601C0 | IC | C | 05 | M1 | FF | 096 | 01 | BILL 8 | B08 | S2 | 01 | R00 | ACF06 | FF |  |  |  |  |  |  |  |  |  |  |  |  |  |  |  | 326 | 1501 |  |
| I05M109901C0 |  | IC-05 ; Wall Prime & 1st coat (Mech RM) | 24d | 2012-02-01 | 2012-03-01 | I05M109205C0, OGNMU00057S0 |  |  |  |  | 188.22d | 0d | WALL PAINT [675 h]; WALL PAINT [842 m2]; Cost |  |  | I05ME09901C0 | IC | C | 05 | M1 | PA | 099 | 01 | BILL 8 | B08 | S2 | 01 | R00 | ACF06 | 099 |  |  |  |  |  |  |  |  |  |  |  |  |  |  |  | 328 | 1469 |  |
| I05M121123C0 |  | IC-05 ; Final Fix, Inst of Fire Extinguishers/FHC (Mech RM) | 48d | 2012-02-01 | 2012-03-29 | I05M109205C0 |  |  |  |  | 218.22d | 152.97d | MECHANICAL [1893.6 h]; Cost |  |  | I05ME21123C0 | IC | C | 05 | M1 | ME | 211 | 23 | BILL 8 | B08 | S2 | FF | R00 | ACF07 | 211 |  | FF | MEP |  |  |  |  |  |  |  |  |  |  |  |  |  |  |  |
| I05M123011C0 |  | IC-05 ; 2nd Fix, Inst of Equipment (FCU,FAN,PUMP) (Mech RM) | 66d | 2012-02-01 | 2012-04-19 | I05M123013C0, IR8M123013C0, I05M109205C0 |  |  |  |  | 72.22d | 0d | MECHANICAL [1326 h]; Cost |  |  | I05ME23011C0 | IC | C | 05 | M1 | ME | 230 | 11 | BILL 8 | B08 | S2 | 2F | R00 | ACF04 | 230 |  | 2n | MEP |  |  |  |  |  |  |  |  |  |  |  | H |  |  |  |
| I05M126009C0 |  | IC-05 ; 2nd Fix, Inst of Equipment (DB,SG) (Mech RM) | 66d | 2012-02-01 | 2012-04-19 | I05M123013C0, IR8M123013C0, I05M109205C0 |  |  |  |  | 62.23d | 0d | ELECTRICAL [3132 h]; Cost |  |  | I05ME26009C0 | IC | C | 05 | M1 | ME | 260 | 09 | BILL 8 | B08 | S2 | 2F | R00 | ACF04 | 260 |  | 2n | MEP |  |  |  |  |  |  |  |  |  |  |  | E |  |  |  |
| I05M126015C0 |  | IC-05 ; Final Fix, Inst of Ceiling rose (Mech RM) | 36d | 2012-02-01 | 2012-03-15 | I05M109205C0 |  |  |  |  | 230.22d | 164.97d | ELECTRICAL [33.6 h]; Cost |  |  | I05ME26015C0 | IC | C | 05 | M1 | ME | 260 | 15 | BILL 8 | B08 | S2 | FF | R00 | ACF07 | 260 |  | FF | MEP |  |  |  |  |  |  |  |  |  |  |  |  |  |  |  |
| I05M126007C0 |  | IC-05 ; 2nd Fix, Cable Pulling (Mech RM) | 48d | 2012-02-20 | 2012-04-16 | I05M126011C0 |  |  |  |  | 119.25d | 30d | ELECTRICAL [2858.4 h]; Cost |  |  | I05ME26007C0 | IC | C | 05 | M1 | ME | 260 | 07 | BILL 8 | B08 | S2 | 2F | R00 | ACF07 | 260 |  | 2n | MEP |  |  |  |  |  |  |  |  |  |  |  |  |  |  |  |
| I05M122003C0 |  | IC-05 ; Final Fix, Inst of All drain (Mech RM) | 18d | 2012-02-23 | 2012-03-15 | I05M109601C0 |  |  |  |  | 230.22d | 164.97d | PLUMBING [630 h]; Cost |  |  | I05ME22003C0 | IC | C | 05 | M1 | ME | 220 | 03 | BILL 8 | B08 | S2 | FF | R00 | ACF07 | 220 |  | FF | MEP |  |  |  |  |  |  |  |  |  |  |  |  |  |  |  |
| I05M108105C0 |  | IC-05 ; Metal Doors (Mech RM) | 20d | 2012-03-01 | 2012-03-25 | I05M108101C0, I05M109601C0, I05M109901C0 |  |  |  |  | 211.22d | 0d | METAL DOORS [390 h]; METAL DOORS [39 no]; Cost |  |  | I05ME08105C0 | IC | C | 05 | M1 | DO | 081 | 05 | BILL 8 | B08 | S2 | DR | R00 | ACF06 | 081 |  |  |  |  |  |  |  |  |  |  |  |  |  |  |  | 317 | 1466 | 08 |
| I05M109903C0 |  | IC-05 ; Wall - Final Paint (Mech RM) | 24d | 2012-03-01 | 2012-03-29 | I05M109901C0 |  |  |  |  | 206.22d | 0d | WALL PAINT [364 h]; WALL PAINT [454 m2]; Cost |  |  | I05ME09903C0 | IC | C | 05 | M1 | PA | 099 | 03 | BILL 8 | B08 | S2 | 02 | R00 | ACF06 | 099 |  |  |  |  |  |  |  |  |  |  |  |  |  |  |  | 329 | 1470 |  |
| I05M126019C0 |  | IC-05 ; Final Fix, Inst of Light fittings (Mech RM) | 54d | 2012-03-01 | 2012-05-03 | I05M109901C0 |  |  |  |  | 188.22d | 122.97d | ELECTRICAL [9577.2 h]; Cost |  |  | I05ME26019C0 | IC | C | 05 | M1 | ME | 260 | 19 | BILL 8 | B08 | S2 | FF | R00 | ACF07 | 260 |  | FF | MEP |  |  |  |  |  |  |  |  |  |  |  |  |  |  |  |
| I05M121115C0 |  | IC-05 ; 2nd Fix, Inst of Sprinkler droppers (Mech RM) | 48d | 2012-03-05 | 2012-04-30 | I05M109205C0, I05M121119C0 |  |  |  |  | 155.55d | 0d | MECHANICAL [800.4 h]; Cost |  |  | I05ME21115C0 | IC | C | 05 | M1 | ME | 211 | 15 | BILL 8 | B08 | S2 | 2F | R00 | ACF07 | 211 |  | 2n | MEP |  |  |  |  |  |  |  |  |  |  |  |  |  |  |  |
| I05M108709C0 |  | IC-05 ; Ironmongery (Mech RM) | 20d | 2012-03-25 | 2012-04-17 | I05M108105C0, OGNMU00059S0 |  |  |  |  | 211.22d | 145.97d | IRONMONGERY [280 h]; IRONMONGERY [28 no]; Cost |  |  | I05ME08709C0 | IC | C | 05 | M1 | DO | 087 | 09 | BILL 8 | B08 | S2 | IM | R00 | ACF06 | 087 |  |  |  |  |  |  |  |  |  |  |  |  |  |  |  | 322 | 1467 | 08 |
| I05M127001C0 |  | IC-05 ; 1st Fix, Wiring/ Cabling work (Mech RM) | 48d | 2012-03-26 | 2012-05-21 | I05M126001C0, I05M126011C0, I05M127010C0 |  |  |  |  | 65.25d | 0d | ELECTRICAL [213.6 h]; Cost |  |  | I05ME27001C0 | IC | C | 05 | M1 | ME | 270 | 01 | BILL 8 | B08 | S2 | 1F | R00 | ACF04 | 270 |  | 1S | MEP | M1F |  |  |  |  |  |  |  |  |  |  |  |  |  |  |
| I05M126017C0 |  | IC-05 ; Final Fix, Inst of Switch/Sockets (Mech RM) | 12d | 2012-03-29 | 2012-04-12 | I05M109901C0, I05M109903C0 |  |  |  |  | 206.22d | 140.97d | ELECTRICAL [164.4 h]; Cost |  |  | I05ME26017C0 | IC | C | 05 | M1 | ME | 260 | 17 | BILL 8 | B08 | S2 | FF | R00 | ACF07 | 260 |  | FF | MEP |  |  |  |  |  |  |  |  |  |  |  |  |  |  |  |
| I05M123023C0 |  | IC-05 ; Final Fix, Inst of Flexible Duct & Plenum boxes (Mech RM) | 36d | 2012-04-02 | 2012-05-14 | I05M123015C0, I05M123017C0 |  |  |  |  | 143.25d | 0d | MECHANICAL [72 h]; Cost |  |  | I05ME23023C0 | IC | C | 05 | M1 | ME | 230 | 23 | BILL 8 | B08 | S2 | FF | R00 | ACF07 | 230 |  | FF | MEP |  |  |  |  |  |  |  |  |  |  |  |  |  |  |  |
| I05M123009C0 |  | IC-05 ; 2nd Fix, Inst of VAV'S CHW connection (Mech RM) | 48d | 2012-04-19 | 2012-06-14 | I05M123011C0 |  |  |  |  | 104.22d | 38.98d | MECHANICAL [901.2 h]; Cost |  |  | I05ME23009C0 | IC | C | 05 | M1 | ME | 230 | 09 | BILL 8 | B08 | S2 | 2F | R00 | ACF07 | 230 |  | 2n | MEP |  |  |  |  |  |  |  |  |  |  |  |  |  |  |  |
| I05M121121C0 |  | IC-05 ; Final Fix, Inst of Sprinklers head (Mech RM) | 36d | 2012-04-30 | 2012-06-11 | I05M121115C0 |  |  |  |  | 155.55d | 90.3d | MECHANICAL [152.4 h]; Cost |  |  | I05ME21121C0 | IC | C | 05 | M1 | ME | 211 | 21 | BILL 8 | B08 | S2 | FF | R00 | ACF07 | 211 |  | FF | MEP |  |  |  |  |  |  |  |  |  |  |  |  |  |  |  |
| I05M123021C0 |  | IC-05 ; Final Fix, Inst of Grilles & Diffusers (Mech RM) | 36d | 2012-05-14 | 2012-06-26 | I05M123023C0 |  |  |  |  | 143.25d | 78d | MECHANICAL [757.2 h]; Cost |  |  | I05ME23021C0 | IC | C | 05 | M1 | ME | 230 | 21 | BILL 8 | B08 | S2 | FF | R00 | ACF07 | 230 |  | FF | MEP |  |  |  |  |  |  |  |  |  |  |  |  |  |  |  |
| I05M126005C0 |  | IC-05 ; 2nd Fix, Wiring for Power/Lighting/Emergency (Mech RM) | 48d | 2012-05-21 | 2012-07-17 | I05M126001C0, I05M126007C0, I05M126011C0, I05M127001C0, I05M127010C0 |  |  |  |  | 89.25d | 0d | ELECTRICAL [213.6 h]; Cost |  |  | I05ME26005C0 | IC | C | 05 | M1 | ME | 260 | 05 | BILL 8 | B08 | S2 | 2F | R00 | ACF07 | 260 |  | 2n | MEP |  |  |  |  |  |  |  |  |  |  |  |  |  |  |  |
| I05M127003C0 |  | IC-05 ; Final Fix, BMS connection work to Equipment (Mech RM) | 60d | 2012-05-21 | 2012-07-31 | I05M121117C0, I05M123011C0, I05M123013C0, I05M123015C0, I05M126009C0, I05M127001C0, I05M127020C0 |  |  |  |  | 65.25d | 0d | ELECTRICAL [15034.8 h]; Cost |  |  | I05ME27003C0 | IC | C | 05 | M1 | ME | 270 | 03 | BILL 8 | B08 | S2 | FF | R00 | ACF07 | 270 |  | FF | MEP |  |  |  |  |  |  |  |  |  |  |  |  |  |  |  |
| I05M126013C0 |  | IC-05 ; Final Fix, Termination & Gladding of Cables (Mech RM) | 36d | 2012-07-17 | 2012-08-30 | I05M109205C0, I05M126005C0 |  |  |  |  | 89.25d | 24d | ELECTRICAL [158.4 h]; Cost |  |  | I05ME26013C0 | IC | C | 05 | M1 | ME | 260 | 13 | BILL 8 | B08 | S2 | FF | R00 | ACF07 | 260 |  | FF | MEP |  |  |  |  |  |  |  |  |  |  |  |  |  |  |  |
| I05M127030C0 |  | IC-05 ; Final Fix, Inst of ELV device (Detector/Speaker) (Mech RM) | 48d | 2012-07-31 | 2012-09-27 | I05M109901C0, I05M123009C0, I05M127020C0, I05M127003C0 |  |  |  |  | 65.25d | 0d | ELECTRICAL [1707.6 h]; Cost |  |  | I05ME27030C0 | IC | C | 05 | M1 | ME | 270 | 30 | BILL 8 | B08 | S2 | FF | R00 | ACF07 | 270 |  | FF | MEP |  |  |  |  |  |  |  |  |  |  |  |  |  |  |  |

| ID | WBS | Activity | Duration | Start | Finish | Predecessors | Complete | Remaining | Planned start | Planned finish | Total float | Free float | Resources | Cost | Actual cost | change id | CCAD BUILDING(SET) | CCAD PHASE(SET) | CCAD FLOOR(SET) | CCAD ZONE(SET) | CCAD WORK(SET) | CCAD SECTION(SET) | CCAD SERIAL No.(SET) | CCAD CBS(SET) | CCAD BILL(SET) | CCAD HANDOVER(SET) | CCAD TAG(SET) | CCAD REV(SET) | CCADACF (SET) | CCAD SSCF | RENZ % COMPLETE | CCAD SUB ZONE MEP(SET) | CCAD CSA | Act Selector % | user_number8 | user_integer1 | user_integer2 | user_number7 | July2011 Target% Complete | N_% | P_811 | P_711 | U% | FILTER | CCAD MEQ | Change Order # | NEW ACTIVITY ID | CCAD DIVISION(SET) |
| --- | --- | --- | --- | --- | --- | --- | --- | --- | --- | --- | --- | --- | --- | --- | --- | --- | --- | --- | --- | --- | --- | --- | --- | --- | --- | --- | --- | --- | --- | --- | --- | --- | --- | --- | --- | --- | --- | --- | --- | --- | --- | --- | --- | --- | --- | --- | --- | --- |
|  | 10 | **Precommissioning Tesing & snagging (Mech-1)** |  | 2012-09-27 | 2012-10-30 |  |  |  |  |  |  |  |  |  |  |  |  |  |  |  |  |  |  |  |  |  |  |  |  |  |  |  |  |  |  |  |  |  |  |  |  |  |  |  |  |  |  |  |
| I05TS01804C0 |  | IC-05 ; MEP de-snag, FIREM sign-off | 9d | 2012-09-27 | 2012-10-08 | I05M121123C0, I05M126015C0, I05M126017C0, I05M126019C0, I05M122003C0, I05M123023C0, I05M127030C0, I05M121121C0, I05M123021C0, I05M127003C0, I05M126013C0 |  |  |  |  | 65.25d | 0d | TESTING & COMMISSIONING [510 h]; Cost |  |  | I05TS01801C0 | IC | C | 05 | TS | SC | 018 | 01 | BILL 8 | B08 | S2 | 01 | R00 | ACF07 | 018 |  |  |  |  |  |  |  |  |  |  |  |  |  |  |  |  |  |  |
| I05TS01807C0 |  | IC-05 ; Touch-up & Clean / JV inspection /CIR /De-snag | 17.25d | 2012-10-08 | 2012-10-30 | I05CO04402C0, I05CO04403C0, I05CO04405C0, I05CO04410C0, I05CO04413C0, I05CO04417C0, I05M107101C0, I05M108101C0, I05M108105C0, I05M108709C0, I05M109201C0, I05M109203C0, I05M109205C0, I05M109601C0, I05M109901C0, I05M109903C0, I05M121121C0, I05M121123C0, I05M122003C0, I05M123021C0, I05M123023C0, I05M126013C0, I05M126015C0, I05M126017C0, I05M126019C0, I05M127003C0, I05M127030C0, I05TS01804C0 |  |  |  |  | 65.25d | 0d | TESTING & COMMISSIONING [128 h]; Cost |  |  | I05TS01802C0 | IC | C | 05 | TS | SC | 018 | 02 | BILL 8 | B08 | S2 | 02 | R00 | ACF07 | 018 |  |  |  |  |  |  |  |  |  |  |  |  |  |  |  |  |  |  |
| I05TS01810C0 |  | IC-05 ; Consultant's final de-snag inspection | 0d | 2012-10-30 | 2012-10-30 | I05TS01807C0, IAFTS01803C0 |  |  |  |  | 65.25d | 3.02d | Cost |  |  | I05TS01803C0 | IC | C | 05 | TS | SC | 018 | 03 | BILL 8 | B08 | S2 | 03 | R00 | ACF07 | 018 |  |  |  |  |  |  |  |  |  |  |  |  |  |  |  |  |  |  |
|  | 04 | **Mech-2** |  | 2011-05-15 | 2012-11-03 |  |  |  |  |  |  |  |  |  |  |  |  |  |  |  |  |  |  |  |  |  |  |  |  |  |  |  |  |  |  |  |  |  |  |  |  |  |  |  |  |  |  |  |
| I05M223001C0 |  | IC-05 ; 1st Fix, Inst. of Supports for MEP (Mech RM-2) | 29d | 2011-05-15 A | 2011-05-30 A | I05S207807C0 | 100% |  | 2011-06-18 | 2011-07-23 |  |  | MECHANICAL [979.2 h]; Cost [32540.2 AED] | 32,540.18 | 32,540.18 | I05M223001C0 | IC | C | 05 | M2 | ME | 230 | 01 | BILL 8 | B08 | S2 | 1F | R00 | ACF04 | 230 | 100 | 1S | MEP | M1F |  |  |  |  |  |  |  |  |  |  |  |  |  |  |
| I05M209201C0 |  | IC-05 ; Metal Studs (Mech RM-2) | 45d | 2011-07-10 A | 2011-11-09 | I05M223001C0 | 30% | 31.5d | 2011-07-23 | 2011-09-15 | 63.75d | 0d | PARTITIONS [1963 h]; PARTITIONS - Metal Studs [150 m]; Cost |  |  | I05M209201C0 | IC | C | 05 | M2 | PT | 092 | 01 | BILL 8 | B08 | S2 | 1F | R00 | ACF06 | 092 |  |  | GP | PMS | 0 | 0 | 0 | 0 |  |  |  |  |  |  |  |  |  |  |
| I05M222011C0 |  | IC-05 ; 1st Fix, Inst of Drainage pipe (Mech RM-2) | 84d | 2011-07-10 A | 2011-12-13 | I05M223001C0, I05M226001C0 SS+14d | 30% | 58.8d | 2011-07-18 | 2011-10-26 | 97.95d | 7.7d | PLUMBING [630 h]; Cost [34080.3 AED] | 34,080.3 | 10,224.09 | I05M222011C0 | IC | C | 05 | M2 | ME | 220 | 11 | BILL 8 | B08 | S2 | 1F | R00 | ACF04 | 220 |  | 1S | MEP | M1F | 0 | 0 | 0 | 0 | 25 | 15 | 30 | 15 | 30 |  |  |  |  |  |
| I05M221111C0 |  | IC-05 ; 1st Fix, Inst of Sprinkler main pipe (Mech RM-2) | 72d | 2011-08-10 A | 2012-02-02 | I05M222006C0 SS+12d, I05M223001C0 | 20% | 57.6d | 2011-09-01 | 2011-11-28 | 113.25d | 0d | MECHANICAL [264 h]; Cost [14398.4 AED] | 14,398.38 | 2,879.68 | I05M221111C0 | IC | C | 05 | M2 | ME | 211 | 11 | BILL 8 | B08 | S2 | 1F | R00 | ACF04 | 211 |  | 1S | MEP | M1F | 0 | 0 | 0 | 0 | 25 |  | 20 | 0 | 20 | zero |  |  |  |  |
| I05M221119C0 |  | IC-05 ; 1st Fix, Inst of Sprinkler branch pipe (Mech RM-2) | 72d | 2011-08-10 A | 2012-04-10 | I05M221111C0 | 20% | 57.6d | 2011-11-24 | 2012-02-20 | 124.05d | 0d | MECHANICAL [609.6 h]; Cost [33303.7 AED] | 33,303.68 | 6,660.74 | I05M221119C0 | IC | C | 05 | M2 | ME | 211 | 19 | BILL 8 | B08 | S2 | 1F | R00 | ACF04 | 211 |  | 1S | MEP | M1F | 0 | 0 | 0 | 0 |  |  | 20 | 0 | 20 |  |  |  |  |  |
| I05M223013C0 |  | IC-05 ; 2nd Fix, Inst of Equipment (AHU) (Mech RM-2) | 90d | 2011-09-05 A | 2012-01-30 | I05M209201C0, I05M222006C0 FF, I05M222011C0 FF, I05S107807C0, I05S207807C0 | 25% | 67.5d | 2011-10-13 | 2012-02-01 | 63.75d | 0d | MECHANICAL [14275.2 h]; Cost [3248518 AED] | 3,248,518 | 812,129.5 | I05M223013C0 | IC | C | 05 | M2 | ME | 230 | 13 | BILL 8 | B08 | S2 | 2F | R00 | ACF04 | 230 |  | 2n | MEP |  |  |  |  |  | 15 |  |  |  | 0 |  | H |  |  |  |
| I05M226001C0 |  | IC-05 ; 1st Fix, Inst of Trunking/Conduiting (Mech RM-2) | 48d | 2011-09-05 A | 2011-11-23 | I05M223001C0 | 10% | 43.2d | 2011-09-01 | 2011-10-26 | 97.95d | 0d | ELECTRICAL [397.2 h]; Cost [20466.7 AED] | 20,466.68 | 2,046.67 | I05M226001C0 | IC | C | 05 | M2 | ME | 260 | 01 | BILL 8 | B08 | S2 | 1F | R00 | ACF04 | 260 |  | 1S | MEP | M1F |  |  |  |  | 10 |  |  |  |  | zero |  |  |  |  |
| I05M209203C0 |  | IC-05 ; Partitions 1st face (Mech RM-2) | 33d | 2011-11-09 | 2011-12-20 | I05M209201C0 |  |  |  |  | 92.25d | 2d | PARTITIONS [150 m]; PARTITIONS [1547 h]; Cost |  |  | I05M209203C0 | IC | C | 05 | M2 | PT | 092 | 03 | BILL 8 | B08 | S2 | 2F | R00 | ACF06 | 092 |  |  | GP | P1F |  |  |  |  |  |  |  |  |  |  |  | 314 | 1463 |  |
| I05M222006C0 |  | IC-05 ; 1st Fix, Inst of Water supply pipe (Mech RM-2) | 54d | 2011-11-09 | 2012-01-15 | I05M222011C0 SS+7d, I05M223001C0, I05M209201C0 |  |  |  |  | 77.25d | 0d | PLUMBING [1670.4 h]; Cost |  |  | I05M222006C0 | IC | C | 05 | M2 | ME | 220 | 06 | BILL 8 | B08 | S2 | 1F | R00 | ACF04 | 220 |  | 1S | MEP | M1F |  |  |  |  | 25 |  |  |  |  | zero |  |  |  |  |
| I05M223005C0 |  | IC-05 ; 1st Fix, Inst of Ducting (Mech RM-2) | 66d | 2011-11-09 | 2012-01-29 | I05M223001C0, I05M223013C0 SS+12d, I05M209201C0 |  |  |  |  | 65.25d | 0d | MECHANICAL [7574.4 h]; Cost |  |  | I05M223005C0 | IC | C | 05 | M2 | ME | 230 | 05 | BILL 8 | B08 | S2 | 1F | R00 | ACF04 | 230 |  | 1S | MEP | M1F |  |  |  |  | 10 |  |  |  |  | zero |  |  |  |  |
| I05M223019C0 |  | IC-05 ; 1st Fix, Inst of CHW pipe (Mech RM-2) | 54d | 2011-11-23 | 2012-01-29 | I05M221111C0 SS+12d, I05M223001C0 |  |  |  |  | 113.25d | 0d | MECHANICAL [2832 h]; Cost |  |  | I05M223019C0 | IC | C | 05 | M2 | ME | 230 | 19 | BILL 8 | B08 | S2 | 1F | R00 | ACF04 | 230 |  | 1S | MEP | M1F |  |  |  |  | 10 |  |  |  |  | zero |  |  |  |  |
| I05M208101C0 |  | IC-05 ; Metal Door Frames (Mech RM-2) | 24d | 2011-11-27 | 2011-12-25 | I05M209201C0, OGNMU00027S0, GNHE08101C0 FS+69d, I05M108101C0 SS+3d |  |  |  |  | 58.75d | 0d | METAL DOORS [73 h]; Cost |  |  | I05M208101C0 | IC | C | 05 | M2 | DO | 081 | 01 | BILL 8 | B08 | S2 | DF | R00 | ACF06 | 081 |  |  |  |  |  |  |  |  |  |  |  |  |  |  |  | 316 | 1465 | 08 |
| I05M209205C0 |  | IC-05 ; Partitions Closing (Mech RM-2) | 36d | 2011-12-22 | 2012-02-05 | I05M209201C0, I05M209203C0, I05M222006C0 SS+35d, I05M222011C0, IAFOA09210C1 FF, I05M208101C0 FF |  |  |  |  | 90.25d | 0d | PARTITIONS [150 m]; PARTITIONS [1989 h]; Cost |  |  | I05M209205C0 | IC | C | 05 | M2 | PT | 092 | 05 | BILL 8 | B08 | S2 | FF | R00 | ACF06 | 092 |  |  | GP | P2F |  |  |  |  |  |  |  |  |  |  |  | 315 | 1464 |  |
| I05M223015C0 |  | IC-05 ; 2nd Fix, Inst of VCD's/FD's (Mech RM-2) | 48d | 2012-01-29 | 2012-03-26 | I05M223005C0 |  |  |  |  | 113.25d | 6d | MECHANICAL [910.8 h]; Cost |  |  | I05M223015C0 | IC | C | 05 | M2 | ME | 230 | 15 | BILL 8 | B08 | S2 | 2F | R00 | ACF07 | 230 |  | 2n | MEP |  |  |  |  |  |  |  |  |  |  |  |  |  |  |  |
| I05M223017C0 |  | IC-05 ; 2nd Fix, Insulation of CHW pipe & Duct (Mech RM-2) | 54d | 2012-01-29 | 2012-04-02 | I05M223005C0, I05M223019C0 |  |  |  |  | 143.25d | 0d | MECHANICAL [3075.6 h]; Cost |  |  | I05M223017C0 | IC | C | 05 | M2 | ME | 230 | 17 | BILL 8 | B08 | S2 | 2F | R00 | ACF07 | 230 |  | 2n | MEP |  |  |  |  |  |  |  |  |  |  |  |  |  |  |  |
| I05M227010C0 |  | IC-05 ; 1st Fix, Inst of Trunking for ELV system (Mech RM-2) | 48d | 2012-01-29 | 2012-03-26 | I05M223005C0 |  |  |  |  | 65.25d | 1.5d | ELECTRICAL [914.4 h]; Cost |  |  | I05M227010C0 | IC | C | 05 | M2 | ME | 270 | 10 | BILL 8 | B08 | S2 | 1F | R00 | ACF04 | 270 |  | 1S | MEP | M1F |  |  |  |  |  |  |  |  |  |  |  |  |  |  |
| I05M207101C0 |  | IC-05 ; Waterproofing (Mech RM-2) | 15d | 2012-01-31 | 2012-02-18 | I05M223013C0 |  |  |  |  | 205.75d | 0d | THERMAL & MOISTURE [752 h]; THERMAL & MOISTURE [4983 m2]; Cost |  |  | I05ME09901C0 | IC | C | 05 | M2 | FF | 071 | 01 | BILL 8 | B08 | S2 | 01 | R00 | ACF03 | 071 |  |  |  |  |  |  |  |  |  |  |  |  |  |  |  | 328 | 1469 |  |
| I05M221117C0 |  | IC-05 ; 2nd Fix, Inst of Zone Control Valve (Mech RM-2) | 48d | 2012-01-31 | 2012-03-27 | I05M223013C0, I05M223019C0 |  |  |  |  | 111.75d | 49.52d | MECHANICAL [379.2 h]; Cost |  |  | I05M221117C0 | IC | C | 05 | M2 | ME | 211 | 17 | BILL 8 | B08 | S2 | 2F | R00 | ACF07 | 211 |  | 2n | MEP |  |  |  |  |  |  |  |  |  |  |  |  |  |  |  |
| I05M226011C0 |  | IC-05 ; 1st Fix, Inst of Cable Tray (Mech RM-2) | 48d | 2012-01-31 | 2012-03-27 | I05M223013C0 |  |  |  |  | 63.75d | 0d | ELECTRICAL [205.2 h]; Cost |  |  | I05M226011C0 | IC | C | 05 | M2 | ME | 260 | 11 | BILL 8 | B08 | S2 | 1F | R00 | ACF04 | 260 |  | 1S | MEP | M1F |  |  |  |  |  |  |  |  |  |  |  |  |  |  |
| I05M221123C0 |  | IC-05 ; Final Fix, Inst of Fire Extinguishers/FHC (Mech RM-2) | 48d | 2012-02-05 | 2012-04-01 | I05M209205C0 |  |  |  |  | 216.25d | 154.03d | MECHANICAL [1893.6 h]; Cost |  |  | I05M221123C0 | IC | C | 05 | M2 | ME | 211 | 23 | BILL 8 | B08 | S2 | FF | R00 | ACF07 | 211 |  | FF | MEP |  |  |  |  |  |  |  |  |  |  |  |  |  |  |  |
| I05M226015C0 |  | IC-05 ; Final Fix, Inst of Ceiling rose (Mech RM-2) | 36d | 2012-02-05 | 2012-03-18 | I05M209205C0 |  |  |  |  | 228.25d | 166.03d | ELECTRICAL [33.6 h]; Cost |  |  | I05M226015C0 | IC | C | 05 | M2 | ME | 260 | 15 | BILL 8 | B08 | S2 | FF | R00 | ACF07 | 260 |  | FF | MEP |  |  |  |  |  |  |  |  |  |  |  |  |  |  |  |
| I05M227020C0 |  | IC-05 ; 2nd Fix, Inst of ELV Equipment (Panels) (Mech RM-2) | 60d | 2012-02-05 | 2012-04-15 | I05M223013C0, I05M209205C0 |  |  |  |  | 96.25d | 34.02d | ELECTRICAL [1041.6 h]; Cost |  |  | I05M227020C0 | IC | C | 05 | M2 | ME | 270 | 20 | BILL 8 | B08 | S2 | 2F | R00 | ACF04 | 270 |  | 2n | MEP |  |  |  |  |  |  |  |  |  |  |  | E |  |  |  |
| I05M209601C0 |  | IC-05 ; Floor Finishes (Mech RM-2) | 18d | 2012-02-19 | 2012-03-10 | I05M207101C0, I05M209205C0 |  |  |  |  | 205.75d | 0d | ASSORTED FLOOR FINISH [1256 h]; ASSORTED FLOOR FINISH [695 m2]; Cost |  |  | I05M209601C0 | IC | C | 05 | M2 | FF | 096 | 01 | BILL 8 | B08 | S2 | 01 | R00 | ACF06 | FF |  |  |  |  |  |  |  |  |  |  |  |  |  |  |  | 326 | 1501 |  |
| I05M223011C0 |  | IC-05 ; 2nd Fix, Inst of Equipment (FCU,FAN,PUMP) (Mech RM-2) | 66d | 2012-02-26 | 2012-05-13 | I05M223013C0, I05M123011C0 SS+20d, I05M209205C0 |  |  |  |  | 72.22d | 0d | MECHANICAL [1326 h]; Cost |  |  | I05M223011C0 | IC | C | 05 | M2 | ME | 230 | 11 | BILL 8 | B08 | S2 | 2F | R00 | ACF04 | 230 |  | 2n | MEP |  |  |  |  |  |  |  |  |  |  |  | H |  |  |  |
| I05M226009C0 |  | IC-05 ; 2nd Fix, Inst of Equipment (DB, SG) (Mech RM-2) | 66d | 2012-03-08 | 2012-05-24 | I05M223013C0, IR8M123013C0, I05M126009C0 SS+30d, I05M209205C0 |  |  |  |  | 62.23d | 0d | ELECTRICAL [3132 h]; Cost |  |  | I05M226009C0 | IC | C | 05 | M2 | ME | 260 | 09 | BILL 8 | B08 | S2 | 2F | R00 | ACF04 | 260 |  | 2n | MEP |  |  |  |  |  |  |  |  |  |  |  | E |  |  |  |
| I05M222003C0 |  | IC-05 ; Final Fix, Inst of All drain (Mech RM-2) | 18d | 2012-03-11 | 2012-03-31 | I05M209601C0 |  |  |  |  | 216.75d | 154.53d | PLUMBING [630 h]; Cost |  |  | I05M222003C0 | IC | C | 05 | M2 | ME | 220 | 03 | BILL 8 | B08 | S2 | FF | R00 | ACF07 | 220 |  | FF | MEP |  |  |  |  |  |  |  |  |  |  |  |  |  |  |  |
| I05M209901C0 |  | IC-05 ; Wall Prime & 1st coat (Mech RM-2) | 24d | 2012-03-17 | 2012-04-14 | I05M209205C0, OGNMU00057S0, I05CO04455C0 FF |  |  |  |  | 151.25d | 0d | WALL PAINT [372 h]; WALL PAINT [463 m2]; Cost |  |  | I05M209901C0 | IC | C | 05 | M2 | PA | 099 | 01 | BILL 8 | B08 | S2 | 01 | R00 | ACF06 | 099 |  |  |  |  |  |  |  |  |  |  |  |  |  |  |  | 328 | 1469 |  |
| I05M226007C0 |  | IC-05 ; 2nd Fix, Cable Pulling (Mech RM-2) | 48d | 2012-03-28 | 2012-05-22 | I05M226011C0 |  |  |  |  | 87.75d | 0d | ELECTRICAL [2858.4 h]; Cost |  |  | I05M226007C0 | IC | C | 05 | M2 | ME | 260 | 07 | BILL 8 | B08 | S2 | 2F | R00 | ACF07 | 260 |  | 2n | MEP |  |  |  |  |  |  |  |  |  |  |  |  |  |  |  |
| I05M227001C0 |  | IC-05 ; 1st Fix, Wiring/ Cabling work (Mech RM-2) | 48d | 2012-03-28 | 2012-05-22 | I05M226001C0, I05M226011C0, I05M227010C0 |  |  |  |  | 63.75d | 0d | ELECTRICAL [213.6 h]; Cost |  |  | I05M227001C0 | IC | C | 05 | M2 | ME | 270 | 01 | BILL 8 | B08 | S2 | 1F | R00 | ACF04 | 270 |  | 1S | MEP | M1F |  |  |  |  |  |  |  |  |  |  |  |  |  |  |
| I05M223023C0 |  | IC-05 ; Final Fix, Inst of Flexible Duct & Plenum boxes (Mech RM-2) | 36d | 2012-04-02 | 2012-05-14 | I05M223015C0, I05M223017C0 |  |  |  |  | 143.25d | 0d | MECHANICAL [72 h]; Cost |  |  | I05M223023C0 | IC | C | 05 | M2 | ME | 230 | 23 | BILL 8 | B08 | S2 | FF | R00 | ACF07 | 230 |  | FF | MEP |  |  |  |  |  |  |  |  |  |  |  |  |  |  |  |
| I05M221115C0 |  | IC-05 ; 2nd Fix, Inst of Sprinkler droppers (Mech RM-2) | 48d | 2012-04-10 | 2012-06-05 | I05M209205C0, I05M221119C0 |  |  |  |  | 124.05d | 0d | MECHANICAL [800.4 h]; Cost |  |  | I05M221115C0 | IC | C | 05 | M2 | ME | 211 | 15 | BILL 8 | B08 | S2 | 2F | R00 | ACF07 | 211 |  | 2n | MEP |  |  |  |  |  |  |  |  |  |  |  |  |  |  |  |
| I05M208105C0 |  | IC-05 ; Metal Doors (Mech RM-2) | 18d | 2012-04-14 | 2012-05-05 | I05M208101C0, I05M209601C0, I05M209901C0 |  |  |  |  | 176.25d | 0d | METAL DOORS [220 h]; METAL DOORS [22 no]; Cost |  |  | I05M208105C0 | IC | C | 05 | M2 | DO | 081 | 05 | BILL 8 | B08 | S2 | DR | R00 | ACF06 | 081 |  |  |  |  |  |  |  |  |  |  |  |  |  |  |  | 317 | 1466 | 08 |
| I05M209903C0 |  | IC-05 ; Wall - Final Paint (Mech RM-2) | 24d | 2012-04-14 | 2012-05-12 | I05M209901C0 |  |  |  |  | 169.25d | 0d | WALL PAINT [201 h]; WALL PAINT [249 m2]; Cost |  |  | I05M209903C0 | IC | C | 05 | M2 | PA | 099 | 03 | BILL 8 | B08 | S2 | 02 | R00 | ACF06 | 099 |  |  |  |  |  |  |  |  |  |  |  |  |  |  |  | 329 | 1470 |  |
| I05M226019C0 |  | IC-05 ; Final Fix, Inst of Light fittings (Mech RM-2) | 54d | 2012-04-14 | 2012-06-17 | I05M209901C0 |  |  |  |  | 151.25d | 89.03d | ELECTRICAL [9577.2 h]; Cost |  |  | I05M226019C0 | IC | C | 05 | M2 | ME | 260 | 19 | BILL 8 | B08 | S2 | FF | R00 | ACF07 | 260 |  | FF | MEP |  |  |  |  |  |  |  |  |  |  |  |  |  |  |  |
| I05M208709C0 |  | IC-05 ; Ironmongery (Mech RM-2) | 20d | 2012-05-05 | 2012-05-28 | I05M208105C0, OGNMU00059S0 |  |  |  |  | 176.25d | 114.03d | IRONMONGERY [150 h]; IRONMONGERY [15 no]; Cost |  |  | I05M208709C0 | IC | C | 05 | M2 | DO | 087 | 09 | BILL 8 | B08 | S2 | IM | R00 | ACF06 | 087 |  |  |  |  |  |  |  |  |  |  |  |  |  |  |  | 322 | 1467 | 08 |
| I05M226017C0 |  | IC-05 ; Final Fix, Inst of Switch/Sockets (Mech RM-2) | 12d | 2012-05-12 | 2012-05-26 | I05M209901C0, I05M209903C0 |  |  |  |  | 169.25d | 107.03d | ELECTRICAL [164.4 h]; Cost |  |  | I05M226017C0 | IC | C | 05 | M2 | ME | 260 | 17 | BILL 8 | B08 | S2 | FF | R00 | ACF07 | 260 |  | FF | MEP |  |  |  |  |  |  |  |  |  |  |  |  |  |  |  |
| I05M223009C0 |  | IC-05 ; 2nd Fix, Inst of VAV'S CHW connection (Mech RM-2) | 48d | 2012-05-13 | 2012-07-09 | I05M223011C0 |  |  |  |  | 84.22d | 22d | MECHANICAL [901.2 h]; Cost |  |  | I05M223009C0 | IC | C | 05 | M2 | ME | 230 | 09 | BILL 8 | B08 | S2 | 2F | R00 | ACF07 | 230 |  | 2n | MEP |  |  |  |  |  |  |  |  |  |  |  |  |  |  |  |
| I05M223021C0 |  | IC-05 ; Final Fix, Inst of Grilles & Diffusers (Mech RM-2) | 36d | 2012-05-14 | 2012-06-26 | I05M223023C0 |  |  |  |  | 143.25d | 81.03d | MECHANICAL [757.2 h]; Cost |  |  | I05M223021C0 | IC | C | 05 | M2 | ME | 230 | 21 | BILL 8 | B08 | S2 | FF | R00 | ACF07 | 230 |  | FF | MEP |  |  |  |  |  |  |  |  |  |  |  |  |  |  |  |
| I05M226005C0 |  | IC-05 ; 2nd Fix, Wiring for Power/Lighting/Emergency (Mech RM-2) | 48d | 2012-05-23 | 2012-07-18 | I05M226001C0, I05M226007C0, I05M226011C0, I05M227001C0, I05M227010C0 |  |  |  |  | 87.75d | 0d | ELECTRICAL [213.6 h]; Cost |  |  | I05M226005C0 | IC | C | 05 | M2 | ME | 260 | 05 | BILL 8 | B08 | S2 | 2F | R00 | ACF07 | 260 |  | 2n | MEP |  |  |  |  |  |  |  |  |  |  |  |  |  |  |  |
| I05M227003C0 |  | IC-05 ; Final Fix, BMS connection work to Equipment (Mech RM-2) | 60d | 2012-05-24 | 2012-08-04 | I05M221117C0, I05M223011C0, I05M223013C0, I05M223015C0, I05M226009C0, I05M227001C0, I05M227020C0 |  |  |  |  | 62.23d | 0d | ELECTRICAL [15034.8 h]; Cost |  |  | I05M227003C0 | IC | C | 05 | M2 | ME | 270 | 03 | BILL 8 | B08 | S2 | FF | R00 | ACF07 | 270 |  | FF | MEP |  |  |  |  |  |  |  |  |  |  |  |  |  |  |  |
| I05M221121C0 |  | IC-05 ; Final Fix, Inst of Sprinklers head (Mech RM-2) | 36d | 2012-06-05 | 2012-07-18 | I05M221115C0 |  |  |  |  | 124.05d | 61.83d | MECHANICAL [152.4 h]; Cost |  |  | I05M221121C0 | IC | C | 05 | M2 | ME | 211 | 21 | BILL 8 | B08 | S2 | FF | R00 | ACF07 | 211 |  | FF | MEP |  |  |  |  |  |  |  |  |  |  |  |  |  |  |  |
| I05M226013C0 |  | IC-05 ; Final Fix, Termination & Gladding of Cables (Mech RM-2) | 36d | 2012-07-19 | 2012-09-01 | I05M209205C0, I05M226005C0 |  |  |  |  | 87.75d | 25.52d | ELECTRICAL [158.4 h]; Cost |  |  | I05M226013C0 | IC | C | 05 | M2 | ME | 260 | 13 | BILL 8 | B08 | S2 | FF | R00 | ACF07 | 260 |  | FF | MEP |  |  |  |  |  |  |  |  |  |  |  |  |  |  |  |
| I05M227030C0 |  | IC-05 ; Final Fix, Inst of ELV device (Detector/Speaker) (Mech RM-2) | 48d | 2012-08-04 | 2012-10-01 | I05M209901C0, I05M223009C0, I05M227020C0, I05M227003C0 |  |  |  |  | 62.23d | 0d | ELECTRICAL [1707.6 h]; Cost |  |  | I05M227030C0 | IC | C | 05 | M2 | ME | 270 | 30 | BILL 8 | B08 | S2 | FF | R00 | ACF07 | 270 |  | FF | MEP |  |  |  |  |  |  |  |  |  |  |  |  |  |  |  |

| ID | WBS | Activity | Duration | Start | Finish | Predecessors | Total float | Free float | Resources | change id | CCAD BUILDING(SET) | CCAD PHASE(SET) | CCAD FLOOR(SET) | CCAD ZONE(SET) | CCAD WORK(SET) | CCAD SECTION(SET) | CCAD SERIAL No.(SET) | CCAD CBS(SET) | CCAD BILL(SET) | CCAD HANDOVER(SET) | CCAD TAG(SET) | CCAD REV(SET) | CCADACF (SET) | CCAD SSCF | Change Order # | NEW ACTIVITY ID | CCAD CSA | Act Selector % | July2011 Target% Complete | CCAD SUB ZONE MEP(SET) | FILTER | CCAD DIVISION(SET) | IDDD | CCAD MEQ |
| --- | --- | --- | --- | --- | --- | --- | --- | --- | --- | --- | --- | --- | --- | --- | --- | --- | --- | --- | --- | --- | --- | --- | --- | --- | --- | --- | --- | --- | --- | --- | --- | --- | --- | --- |
|  | 10 | **Precommissioning Tesing & snagging (Mech-2)** |  | 2012-10-01 | 2012-11-03 |  |  |  |  |  |  |  |  |  |  |  |  |  |  |  |  |  |  |  |  |  |  |  |  |  |  |  |  |  |
| I05TS01805C0 |  | IC-05 ; MEP de-snag, FIREM sign-off | 9d | 2012-10-01 | 2012-10-11 | I05M221123C0, I05M226015C0, I05M226017C0, I05M226019C0, I05M222003C0, I05M223023C0, I05M227030C0, I05M221121C0, I05M223021C0, I05M227003C0, I05M226013C0 | 62.23d | 0d | TESTING & COMMISSIONING [510 h]; Cost | I05TS01801C0 | IC | C | 05 | TS | SC | 018 | 01 | BILL 8 | B08 | S2 | 01 | R00 | ACF07 | 018 |  |  |  |  |  |  |  |  |  |  |
| I05TS01808C0 |  | IC-05 ; Touch-up & Clean / JV inspection /CIR /De-snag | 17.25d | 2012-10-11 | 2012-11-03 | I05CO04402C0, I05CO04403C0, I05CO04405C0, I05CO04410C0, I05CO04413C0, I05CO04417C0, I05M207101C0, I05M208101C0, I05M208105C0, I05M208709C0, I05M209201C0, I05M209203C0, I05M209205C0, I05M209601C0, I05M209901C0, I05M209903C0, I05M221121C0, I05M221123C0, I05M222003C0, I05M223021C0, I05M223023C0, I05M226013C0, I05M226015C0, I05M226017C0, I05M226019C0, I05M227003C0, I05M227030C0, I05TS01805C0 | 62.23d | 0d | TESTING & COMMISSIONING [128 h]; Cost | I05TS01802C0 | IC | C | 05 | TS | SC | 018 | 02 | BILL 8 | B08 | S2 | 02 | R00 | ACF07 | 018 |  |  |  |  |  |  |  |  |  |  |
| I05TS01811C0 |  | IC-05 ; Consultant's final de-snag inspection | 0d | 2012-11-03 | 2012-11-03 | I05TS01808C0, I05TS01810C0 | 62.23d | 37.23d | Cost | I05TS01803C0 | IC | C | 05 | TS | SC | 018 | 03 | BILL 8 | B08 | S2 | 03 | R00 | ACF07 | 018 |  |  |  |  |  |  |  |  |  |  |
|  | 05 | **TR Room** |  | 2011-10-01 | 2012-08-11 |  |  |  |  |  |  |  |  |  |  |  |  |  |  |  |  |  |  |  |  |  |  |  |  |  |  |  |  |  |
| I05TR09201C0 |  | IC-05 ; Metal Studs (TR RM) | 18d | 2011-10-01 | 2011-10-20 | I05PA09201C0 SS | 86d | 0d | PARTITIONS [318 h]; PARTITIONS - Metal Studs [24 m]; Cost | I05TR09201C0 | IC | C | 05 | TR | PT | 092 | 01 | BILL 8 | B08 | S2 | 1F | R00 | ACF06 | 092 | 313 | 885 | GP | PMS |  |  |  |  |  |  |
| I05TR09203C0 |  | IC-05 ; Partitions 1st face (TR RM) | 24d | 2011-10-22 | 2011-11-21 | I05TR09201C0 | 98d | 52.8d | PARTITIONS [242 h]; PARTITIONS [24 m]; Cost | I05TR09203C0 | IC | C | 05 | TR | PT | 092 | 03 | BILL 8 | B08 | S2 | 2F | R00 | ACF06 | 092 | 314 | 886 | GP | P1F |  |  |  |  |  |  |
| I05TR26026C0 |  | IC-05 ; 2nd Fix, Conduit (TR RM) | 36d | 2011-10-22 | 2011-12-07 | I05TR09201C0 | 86d | 0d | ELECTRICAL [397.2 h]; Cost | I05TR26026C0 | IC | C | 05 | TR | ME | 260 | 26 | BILL 8 | B08 | S2 | 2F | R00 | ACF07 | 260 |  |  | MEP |  | 25 | 2n | zero |  |  |  |
| I05TR08101C0 |  | IC-05 ; Door Frames (TR RM) | 18d | 2011-11-01 | 2011-11-24 | I05TR09201C0, GNHE08101C0 FS+69d | 125d | 79.8d | ASSORTED DOORS [18 h]; Cost | I05TR08101C0 | IC | C | 05 | TR | DO | 081 | 01 | BILL 8 | B08 | S2 | DF | R00 | ACF06 | 081 | 316 | 20001090 |  |  |  |  |  | 08 |  |  |
| I05TR01005C0 |  | IC-05 ; 2nd, Wall Inspection by Consultant (TR RM) | 0d | 2011-12-08 | 2011-12-08 | I05TR26026C0 | 86d | 40.8d | Cost | I05TR01005C0 | IC | C | 05 | TR | ME | 010 | 05 | BILL 8 | B08 | S2 | WI | R00 | ACF07 | 010 |  |  | MEP |  |  | 2n |  |  |  |  |
| I05TR09205C0 |  | IC-05 ; Partitions Closing (TR RM) | 30d | 2012-01-25 | 2012-03-01 | I05TR01005C0, I05TR09201C0, I05TR09203C0, IAFOA09210C1 FF, I05TR08101C0 FF, I05PA09205C0 SS | 45.2d | 0d | PARTITIONS [307 h]; PARTITIONS [24 m]; Cost | I05TR09205C0 | IC | C | 05 | TR | PT | 092 | 05 | BILL 8 | B08 | S2 | FF | R00 | ACF06 | 092 | 315 | 887 | GP | P2F |  |  |  |  |  |  |
| I05TR08105C0 |  | IC-05 ; Doors (TR RM) | 12d | 2012-03-01 | 2012-03-15 | I05TR08101C0, I05TR09501C0, I05TR09601C0, I05TR09901C0, OGNMU00059S0, OGNMU00065S0 | 135.2d | 0d | ASSORTED DOORS [33 h]; Cost | I05TR08105C0 | IC | C | 05 | TR | DO | 081 | 05 | BILL 8 | B08 | S2 | DF | R00 | ACF06 | 081 | 317 | 1325 |  |  |  |  |  | 08 |  |  |
| I05TR09501C0 |  | IC-05 ; Ceiling Grid and Service Tile (TR RM) | 0d | 2012-03-01 | 2012-03-01 | I05TR09205C0, OGNMU00023S0, OGNMU00037S0, I05TR09901C0 | 81.2d | 0d | Cost | I05TR09501C0 | IC | C | 05 | TR | CE | 095 | 01 | BILL 8 | B08 | S2 | 01 | R00 | ACF06 | 095 | 336 | 1327 |  |  |  |  |  |  | 1 |  |
| I05TR09601C0 |  | IC-05 ; Flooring (Rubber, etc) (TR RM) | 0d | 2012-03-01 | 2012-03-01 | I05TR09205C0, I05TR09501C0 | 81.2d | 0d | Cost | I05TR09601C0 | IC | C | 05 | TR | FF | 096 | 01 | BILL 8 | B08 | S2 | 03 | R00 | ACF06 | RF | 359 | 20001120 |  |  |  |  |  |  |  |  |
| I05TR09901C0 |  | IC-05 ; Wall Prime & 1st coat (TR RM) | 0d | 2012-03-01 | 2012-03-01 | I05TR09205C0 | 81.2d | 0d | Cost | I05TR09901C0 | IC | C | 05 | TR | PA | 099 | 01 | BILL 8 | B08 | S2 | 01 | R00 | ACF06 | 099 | 360 | 20001110 |  |  |  |  |  |  |  |  |
| I05TR09903C0 |  | IC-05 ; Wall - Final Paint (TR RM) | 0d | 2012-03-01 | 2012-03-01 | I05TR09901C0 | 147.2d | 102d | Cost | I05TR09903C0 | IC | C | 05 | TR | PA | 099 | 03 | BILL 8 | B08 | S2 | 02 | R00 | ACF06 | 099 | 361 | 1312 |  |  |  |  |  |  |  |  |
| I05TR09905C0 |  | IC-05 ; Ceiling Prime & 1st coat (TR RM) | 0d | 2012-03-01 | 2012-03-01 | I05TR09501C0 | 147.2d | 72d | Cost | I05TR09905C0 | IC | C | 05 | TR | PA | 099 | 05 | BILL 8 | B08 | S2 | 01 | R00 | ACF06 | 099 | 362 | 1313 |  |  |  |  |  |  |  |  |
| I05TR21115C0 |  | IC-05 ; 2nd Fix, Gaseous Fire Suppression (TR RM) | 36d | 2012-03-01 | 2012-04-12 | I05TR09601C0 | 81.2d | 36d | MECHANICAL [1850.4 h]; Cost | I05TR21115C0 | IC | C | 05 | TR | ME | 211 | 15 | BILL 8 | B08 | S2 | 2F | R00 | ACF07 | 211 | 411 | 20001130 | MEP |  |  | 2n |  |  |  |  |
| I05TR23003C0 |  | IC-05 ; Final Fix, Inst of Grilles & Diffusers (TR RM) | 30d | 2012-03-01 | 2012-04-05 | I05TR09501C0 | 87.2d | 42d | MECHANICAL [757.2 h]; Cost | I05TR23003C0 | IC | C | 05 | TR | ME | 230 | 03 | BILL 8 | B08 | S2 | FF | R00 | ACF07 | 230 |  |  | MEP |  |  | FF |  |  |  |  |
| I05TR23009C0 |  | IC-05 ; 2nd Fix, Inst of VAV'S CHW connection (TR RM) | 36d | 2012-03-01 | 2012-04-12 | I05TR09205C0 | 45.2d | 0d | MECHANICAL [901.2 h]; Cost | I05TR23009C0 | IC | C | 05 | TR | ME | 230 | 09 | BILL 8 | B08 | S2 | 2F | R00 | ACF07 | 230 |  |  | MEP |  |  | 2n |  |  |  |  |
| I05TR23011C0 |  | IC-05 ; 2nd Fix, Inst of VCD's/FD's (TR RM) | 36d | 2012-03-01 | 2012-04-12 | I05TR09205C0 | 45.2d | 0d | MECHANICAL [910.8 h]; Cost | I05TR23011C0 | IC | C | 05 | TR | ME | 230 | 11 | BILL 8 | B08 | S2 | 2F | R00 | ACF07 | 230 |  |  | MEP |  |  | 2n |  |  |  |  |
| I05TR23023C0 |  | IC-05 ; 2nd Fix, Flexible ducts (TR RM) | 36d | 2012-03-01 | 2012-04-12 | I05TR09205C0, I05TR09501C0 | 81.2d | 36d | MECHANICAL [72 h]; Cost | I05TR23023C0 | IC | C | 05 | TR | ME | 230 | 23 | BILL 8 | B08 | S2 | 2F | R00 | ACF07 | 230 | 412 | 20001140 | MEP |  |  | 2n |  |  |  |  |
| I05TR23074C0 |  | IC-05 ; Final Fix, Grilles, panels & diffusers (TR RM) | 30d | 2012-03-01 | 2012-04-05 | I05TR09501C0 | 87.2d | 42d | MECHANICAL [757.2 h]; Cost | I05TR23074C0 | IC | C | 05 | TR | ME | 230 | 74 | BILL 8 | B08 | S2 | FF | R00 | ACF07 | 230 | 419 | 20001160 | MEP |  |  | FF |  |  |  |  |
| I05TR26005C0 |  | IC-05 ; 2nd Fix, Wiring for Power/Lighting/Emergency (TR RM) | 36d | 2012-03-01 | 2012-04-12 | I05TR26026C0, I05TR09501C0 | 81.2d | 36d | ELECTRICAL [213.6 h]; Cost | I05TR26005C0 | IC | C | 05 | TR | ME | 260 | 05 | BILL 8 | B08 | S2 | 2F | R00 | ACF07 | 260 |  |  | MEP |  |  | 2n |  |  |  |  |
| I05TR26007C0 |  | IC-05 ; 2nd Fix, Cable Pulling (TR RM) | 36d | 2012-03-01 | 2012-04-12 | I05TR09203C0, I05TR09205C0 | 81.2d | 36d | ELECTRICAL [2858.4 h]; Cost | I05TR26007C0 | IC | C | 05 | TR | ME | 260 | 07 | BILL 8 | B08 | S2 | 2F | R00 | ACF07 | 260 |  |  | MEP |  |  | 2n |  |  |  |  |
| I05TR26009C0 |  | IC-05 ; 2nd Fix, Inst of Equipment (DB, TR, SG,BUS) (TR RM) | 36d | 2012-03-01 | 2012-04-12 | I05TR09205C0 | 51.2d | 0d | ELECTRICAL [6981.6 h]; Cost | I05TR26009C0 | IC | C | 05 | TR | ME | 260 | 09 | BILL 8 | B08 | S2 | 2F | R00 | ACF04 | 260 |  |  | MEP |  |  | 2n |  |  |  | E |
| I05TR26015C0 |  | IC-05 ; Final Fix, Inst of Ceiling rose (TR RM) | 30d | 2012-03-01 | 2012-04-05 | I05TR09501C0 | 87.2d | 42d | ELECTRICAL [33.6 h]; Cost | I05TR26015C0 | IC | C | 05 | TR | ME | 260 | 15 | BILL 8 | B08 | S2 | FF | R00 | ACF07 | 260 |  |  | MEP |  |  | FF |  |  |  |  |
| I05TR26019C0 |  | IC-05 ; Final Fix, Inst of Light fittings (TR RM) | 30d | 2012-03-01 | 2012-04-05 | I05TR09501C0 | 87.2d | 42d | ELECTRICAL [9577.2 h]; Cost | I05TR26019C0 | IC | C | 05 | TR | ME | 260 | 19 | BILL 8 | B08 | S2 | FF | R00 | ACF07 | 260 |  |  | MEP |  |  | FF |  |  |  |  |
| I05TR26027C0 |  | IC-05 ; 2nd Fix, Wiring / Cabling (TR RM) | 36d | 2012-03-01 | 2012-04-12 | I05TR09205C0 | 81.2d | 36d | ELECTRICAL [213.6 h]; Cost | I05TR26027C0 | IC | C | 05 | TR | ME | 260 | 27 | BILL 8 | B08 | S2 | 2F | R00 | ACF07 | 260 | 417 | 1318 | MEP |  |  | 2n |  |  |  |  |
| I05TR26076C0 |  | IC-05 ; Final Fix, Lighting fittings (TR RM) | 30d | 2012-03-01 | 2012-04-05 | I05TR09501C0 | 87.2d | 42d | ELECTRICAL [9577.2 h]; Cost | I05TR26076C0 | IC | C | 05 | TR | ME | 260 | 76 | BILL 8 | B08 | S2 | FF | R00 | ACF07 | 260 | 420 | 20001170 | MEP |  |  | FF |  |  |  |  |
| I05TR27002C0 |  | IC-05 ; 2nd Fix, Dressing of ELV panels (TR RM) | 36d | 2012-03-01 | 2012-04-12 | I05TR09205C0, I05TR27020C0 SS | 87.2d | 0d | ELECTRICAL [216 h]; Cost | I05TR27002C0 | IC | C | 05 | TR | ME | 270 | 02 | BILL 8 | B08 | S2 | 2F | R00 | ACF07 | 270 |  |  | MEP |  |  | 2n |  |  |  |  |
| I05TR27020C0 |  | IC-05 ; 2nd Fix, Inst of ELV Equipment (Panels) (TR RM) | 42d | 2012-03-01 | 2012-04-19 | I05TR09205C0, I05TR09501C0 | 87.2d | 0d | ELECTRICAL [1041.6 h]; Cost | I05TR27020C0 | IC | C | 05 | TR | ME | 270 | 20 | BILL 8 | B08 | S2 | 2F | R00 | ACF04 | 270 |  |  | MEP |  |  | 2n |  |  |  | E |
| I05TR27030C0 |  | IC-05 ; Final Fix, Inst of ELV device (Detector/Speaker) (TR RM) | 42d | 2012-03-01 | 2012-04-19 | I05TR27002C0 SS | 87.2d | 42d | ELECTRICAL [1707.6 h]; Cost | I05TR27030C0 | IC | C | 05 | TR | ME | 270 | 30 | BILL 8 | B08 | S2 | FF | R00 | ACF07 | 270 |  |  | MEP |  |  | FF |  |  |  |  |
| I05TR08709C0 |  | IC-05 ; Ironmongery (TR RM) | 0d | 2012-03-15 | 2012-03-15 | I05TR08105C0 | 135.2d | 90d | Cost | I05TR08709C0 | IC | C | 05 | TR | DO | 087 | 09 | BILL 8 | B08 | S2 | IM | R00 | ACF06 | 087 | 322 | 20001100 |  |  |  |  |  | 08 |  |  |
| I05TR23013C0 |  | IC-05 ; 2nd Fix, Insulation of CHW pipe & Duct (TR RM) | 36d | 2012-04-12 | 2012-05-24 | I05TR23009C0, I05TR23011C0 | 45.2d | 0d | MECHANICAL [3075.6 h]; Cost | I05TR23013C0 | IC | C | 05 | TR | ME | 230 | 13 | BILL 8 | B08 | S2 | 2F | R00 | ACF07 | 230 |  |  | MEP |  |  | 2n |  |  |  |  |
| I05TR26013C0 |  | IC-05 ; Final Fix, Termination & Gladding of Cables (TR RM) | 30d | 2012-04-12 | 2012-05-17 | I05TR26009C0 | 51.2d | 6d | ELECTRICAL [158.4 h]; Cost | I05TR26013C0 | IC | C | 05 | TR | ME | 260 | 13 | BILL 8 | B08 | S2 | FF | R00 | ACF07 | 260 |  |  | MEP |  |  | FF |  |  |  |  |
| I05TR01006C0 |  | IC-05 ; 2nd, Ceiling Inspection by Consultants (TR RM) | 0d | 2012-05-24 | 2012-05-24 | I05TR23009C0, I05TR23011C0, I05TR23013C0, I05TR26007C0, I05TR09501C0, I05TR23003C0, I05TR23074C0, I05TR26015C0, I05TR26019C0, I05TR26076C0, I05TR26013C0 | 45.2d | 0d | Cost | I05TR01006C0 | IC | C | 05 | TR | ME | 010 | 06 | BILL 8 | B08 | S2 | CI | R00 | ACF07 | 010 |  |  | MEP |  |  | 2n |  |  |  |  |
| I05TR09503C0 |  | IC-05 ; Ceiling closure (TR RM) | 0d | 2012-05-24 | 2012-05-24 | I05TR01006C0, I05TR21115C0, I05TR26005C0, I05TR26007C0, I05TR26026C0, I05TR26027C0, OGNMU00023S0, OGNMU00037S0, I05TR23023C0 | 45.2d | 0d | Cost | I05TR09503C0 | IC | C | 05 | TR | CE | 095 | 03 | BILL 8 | B08 | S2 | 02 | R00 | ACF06 | 095 | 337 | 20001080 |  |  |  |  |  |  |  |  |
| I05TR09907C0 |  | IC-05 ; Ceiling - Final paint (TR RM) | 0d | 2012-05-24 | 2012-05-24 | I05TR09905C0, I05TR09503C0 | 75.2d | 30d | Cost | I05TR09907C0 | IC | C | 05 | TR | PA | 099 | 07 | BILL 8 | B08 | S2 | 02 | R00 | ACF06 | 099 | 363 | 1314 |  |  |  |  |  |  |  |  |
| I05TR26017C0 |  | IC-05 ; Final Fix, Inst of Switch/Sockets (TR RM) | 12d | 2012-05-24 | 2012-06-07 | I05TR09901C0, I05TR09503C0 | 45.2d | 0d | ELECTRICAL [164.4 h]; Cost | I05TR26017C0 | IC | C | 05 | TR | ME | 260 | 17 | BILL 8 | B08 | S2 | FF | R00 | ACF07 | 260 |  |  | MEP |  |  | FF |  |  |  |  |
| I05TR01802C0 |  | IC-05 ; MEP de-snag, FIREM sign-off | 18d | 2012-06-07 | 2012-06-30 | I05TR26017C0, I05TR23074C0, I05TR23003C0, I05TR26076C0, I05TR26013C0, I05TR26015C0, I05TR26019C0, I05TR27030C0, I05TR27020C0 | 45.2d | 0d | TESTING & COMMISSIONING [510 h]; Cost | CP3CO01851C0 | IC | C | 05 | TR | SC | 018 | 53 | BILL 8 | B08 | S2 | 01 | R00 | ACF07 | 018 |  |  |  |  |  |  |  |  |  |  |
| I05TR01801C0 |  | IC-05 ; Touch-up & Clean / JV inspection /CIR /De-snag | 24d | 2012-06-30 | 2012-07-28 | I05TR01802C0, I05TR08709C0, I05TR09601C0, I05TR09903C0, I05TR09907C0, I05TR09503C0 | 45.2d | 0d | TESTING & COMMISSIONING [128 h]; Cost | I05TR01851C0 | IC | C | 05 | TR | SC | 018 | 51 | BILL 8 | B08 | S2 | 02 | R00 | ACF07 | 018 | 396 |  |  |  |  |  |  |  |  |  |
| I05TR01803C0 |  | IC-05 ; Consultant's final de-snag inspection | 12d | 2012-07-28 | 2012-08-11 | I05TR01801C0 | 45.2d | 31.2d | Labor General [1 h]; Cost | CP3TS01803C0 | IC | C | 05 | TR | SC | 018 | 03 | BILL 8 | B08 | S1 | 03 | R00 | ACF07 | 018 |  |  |  |  |  |  |  |  |  |  |

| ID | WBS | Activity | Type | Duration | Start | Finish | Predecessors | Complete | Remaining | Planned start | Planned finish | Total float | Free float | Resources | Cost | Actual cost | change id | RENZ % COMPLETE | CCAD BUILDING(SET) | CCAD PHASE(SET) | CCAD FLOOR(SET) | CCAD ZONE(SET) | CCAD WORK(SET) | CCAD SECTION(SET) | CCAD SERIAL No.(SET) | CCAD CBS(SET) | CCAD BILL(SET) | CCAD HANDOVER(SET) | CCAD TAG(SET) | CCAD REV(SET) | CCADACF (SET) | CCAD SSCF | Actual Cost | Phase | Area/ Department | Grids | Are | Weight & Nos | Process | Levels | CCAD CSA | Claimed This Month | P_811 | P_711 | user_number8 | user_integer1 | user_integer2 | user_number7 | U% | Change Order # | NEW ACTIVITY ID | CCAD SUB ZONE MEP(SET) | Act Selector % | July2011 Target% Complete | N_% | FILTER | CCAD DIVISION(SET) | CCAD MEQ |
| --- | --- | --- | --- | --- | --- | --- | --- | --- | --- | --- | --- | --- | --- | --- | --- | --- | --- | --- | --- | --- | --- | --- | --- | --- | --- | --- | --- | --- | --- | --- | --- | --- | --- | --- | --- | --- | --- | --- | --- | --- | --- | --- | --- | --- | --- | --- | --- | --- | --- | --- | --- | --- | --- | --- | --- | --- | --- | --- |
|  | 06 | **Level 6** |  |  | 2010-11-19 | 2012-12-18 |  |  |  |  |  |  |  |  |  |  |  |  |  |  |  |  |  |  |  |  |  |  |  |  |  |  |  |  |  |  |  |  |  |  |  |  |  |  |  |  |  |  |  |  |  |  |  |  |  |  |  |  |
|  | 01 | **Structure & Envelopment** |  |  | 2010-11-19 | 2012-04-29 |  |  |  |  |  |  |  |  |  |  |  |  |  |  |  |  |  |  |  |  |  |  |  |  |  |  |  |  |  |  |  |  |  |  |  |  |  |  |  |  |  |  |  |  |  |  |  |  |  |  |  |  |
| I06SB03303C0 |  | IC-06 ; Corewall Concrete (Zone SB) |  | 3d | 2010-11-19 A | 2010-11-25 A | I05SB03303C0 | 100% |  | 2011-01-05 | 2011-01-08 |  |  | CONCRETE [8712 h]; CONCRETE [219 m3]; Cost |  |  | I06SB03303C0 | 100 | IC | C | 06 | SB | CT | 033 | 03 | BILL 8 | B08 | S2 | 04 | R00 | ACF03 | 033 |  |  |  |  |  |  |  |  |  |  |  |  |  |  |  |  |  |  |  |  |  |  |  |  |  |  |
| I06SE03305C0 |  | IC-06 ; Corewall Concrete (Zone SE) |  | 5d | 2010-11-19 A | 2010-11-25 A | I05SE03305C0 | 100% |  | 2011-01-08 | 2011-01-12 |  |  | CONCRETE [2064 h]; CONCRETE [52 m3]; Cost |  |  | I06SE03305C0 | 100 | IC | C | 06 | SE | CT | 033 | 05 | BILL 8 | B08 | S2 | 04 | R00 | ACF03 | 033 |  |  |  |  |  |  |  |  |  |  |  |  |  |  |  |  |  |  |  |  |  |  |  |  |  |  |
| I06S105101C0 |  | IC-06 ; Erection of Structural Steel of 6th Floor (Zone S1) |  | 5.56d | 2010-12-13 A | 2011-04-05 A | I05S105103C0, I06SB03303C0 | 100% |  | 2011-01-25 | 2011-01-31 |  |  | STRUCTURAL STEEL [8845 h]; STRUCTURAL STEEL [324 T(Fe)]; Cost |  |  | I06S105101C0 | 100 | IC | C | 06 | S1 | ST | 051 | 01 | BILL 8 | B08 | S2 | 01 | R00 | ACF03 | 051 | 1957343.25 | Z2 | IC | 6T | K1 | A8A | EREC | 6FLR | ST |  |  |  |  |  |  |  |  |  |  |  |  |  |  |  |  |  |
| I06S205101C0 |  | IC-06 ; Erection of Structural Steel of 6th Floor (Zone S2) |  | 6d | 2010-12-18 A | 2011-04-18 A | I05S205103C0, I06SE03305C0 | 100% |  | 2011-03-07 | 2011-03-14 |  |  | STRUCTURAL STEEL [7395 h]; STRUCTURAL STEEL [270 T(Fe)]; Cost |  |  | I06S205101C0 | 100 | IC | C | 06 | S2 | ST | 051 | 01 | BILL 8 | B08 | S2 | 01 | R00 | ACF03 | 051 |  | Z2 | IC | 6T | K1 | A8A | EREC | 6FLR | ST |  |  |  |  |  |  |  |  |  |  |  |  |  |  |  |  |  |
| I06S105103C0 |  | IC-06 ; Alignment & welding of 6th Floor (Zone S1) |  | 5d | 2010-12-20 A | 2011-03-22 A | I06S105101C0 | 100% |  | 2011-02-01 | 2011-02-07 |  |  | STRUCTURAL STEEL [522 h]; Cost |  |  | I06S105103C0 | 100 | IC | C | 06 | S1 | ST | 051 | 03 | BILL 8 | B08 | S2 | 02 | R00 | ACF03 | 051 | 217482.58 | Z2 | IC | 6T | K1 | A8A | EREC | 6FLR | ST |  |  |  |  |  |  |  |  |  |  |  |  |  |  |  |  |  |
| I06S205103C0 |  | IC-06 ; Alignment & welding of 6th Floor (Zone S2) |  | 11d | 2011-01-05 A | 2011-05-30 A | I06S205101C0 | 100% |  | 2011-02-06 | 2011-02-19 |  |  | STRUCTURAL STEEL [1101 h]; Cost |  |  | I06S205103C0 | 100 | IC | C | 06 | S2 | ST | 051 | 03 | BILL 8 | B08 | S2 | 02 | R00 | ACF03 | 051 |  | Z2 | IC | 6T | K1 | A8A | EREC | 6FLR | ST |  |  |  |  |  |  |  |  |  |  |  |  |  |  |  |  |  |
| I06S105305C0 |  | IC-06 ; Metal Decking Lvl - 6 (Zone S1) |  | 14d | 2011-02-21 A | 2011-05-30 A | I06S105103C0, I07S105101C0 | 100% |  | 2011-03-02 | 2011-03-19 |  |  | METAL DECKING [1095 h]; METAL DECKING [1386 m2]; Cost |  |  | I06S105305C0 | 100 | IC | C | 06 | S1 | ST | 053 | 05 | BILL 8 | B08 | S2 | 03 | R00 | ACF03 | 053 |  | Z2 | IC | 6T | K1 | A8A | MDEC | 6FLR | ST |  |  |  |  |  |  |  |  |  |  |  |  |  |  |  |  |  |
| I06S205305C0 |  | IC-06 ; Metal Decking Lvl - 6 (Zone S2) |  | 15d | 2011-02-26 A | 2011-03-29 A | I06S205103C0, I07S205101C0 | 100% |  | 2011-03-15 | 2011-04-02 |  |  | METAL DECKING [2264 h]; METAL DECKING [2866 m2]; Cost |  |  | I06S205305C0 | 100 | IC | C | 06 | S2 | ST | 053 | 05 | BILL 8 | B08 | S2 | 03 | R00 | ACF03 | 053 |  | Z2 | IC | 6T | K1 | A8A | MDEC | 6FLR | ST |  |  |  |  |  |  |  |  |  |  |  |  |  |  |  |  |  |
| I06S203399C0 |  | IC-06 ; Concrete on Metal Decking Lvl - 6 (Zone S2) |  | 10d | 2011-04-05 A | 2011-06-02 A | I06S205305C0 | 100% |  | 2011-04-02 | 2011-04-13 |  |  | CONCRETE [13320 h]; CONCRETE [335 m3]; Cost |  |  | I06S205335C0 | 95 | IC | C | 06 | S2 | CT | 033 | 99 | BILL 8 | B08 | S2 | 08 | R00 | ACF03 | 033 |  | Z2 | IC | 6T | K1 | A8A | MDEC | 6FLR |  | 17297.61 |  |  |  |  |  |  |  |  |  |  |  |  |  |  |  |  |
| I06S103399C0 |  | IC-06 ; Concrete on Metal Decking Lvl - 6 (Zone S1) |  | 10d | 2011-04-14 A | 2011-05-30 A | I06S105305C0 | 100% |  | 2011-03-19 | 2011-03-30 |  |  | CONCRETE [13320 h]; CONCRETE [335 m3]; Cost |  |  | I06S105335C0 | 100 | IC | C | 06 | S1 | CT | 033 | 99 | BILL 8 | B08 | S2 | 08 | R00 | ACF03 | 033 |  | Z2 | IC | 6T | K1 | A8A | MDEC | 6FLR |  |  |  |  |  |  |  |  |  |  |  |  |  |  |  |  |  |  |
| I06S107807C0 |  | IC-06 ; Cementitious Fire proofing at Lvl 6 (Zone S1) |  | 11d | 2011-04-19 A | 2011-06-28 A | I07S103399C0 | 100% |  | 2011-03-31 | 2011-04-13 |  |  | CEMENTITIOUS FIREPROOFING [1081 h]; CEMENTITIOUS FIREPROOFING [2161 m2]; Cost |  |  | I06S107807C0 | 95 | IC | C | 06 | S1 | ST | 078 | 07 | BILL 8 | B08 | S2 | 04 | R00 | ACF03 | 078 |  | Z2 | IC | 6T | K1 | A8A | FIRE | 6FLR | ST | 9451.07 |  |  |  |  |  |  |  |  |  |  |  |  |  |  |  |  |
| I06S207807C0 |  | IC-06 ; Cementitious Fire proofing at Lvl 6 (Zone S2) |  | 14d | 2011-04-23 A | 2011-06-27 A | I07S203399C0 | 100% |  | 2011-04-25 | 2011-05-11 |  |  | CEMENTITIOUS FIREPROOFING [2234 h]; CEMENTITIOUS FIREPROOFING [4467 m2]; Cost |  |  | I06S207807C0 | 95 | IC | C | 06 | S2 | ST | 078 | 07 | BILL 8 | B08 | S2 | 04 | R00 | ACF03 | 078 |  | Z2 | IC | 6T | K1 | A8A | FIRE | 6FLR | ST | 19539.7 |  |  |  |  |  |  |  |  |  |  |  |  |  |  |  |  |
| I06GN02402C0 |  | IC-06 ; Temporary Enclosure | level of effort | 84d | 2011-06-05 A | 2012-04-07 | I06SL09203C0 SS, I06P209203C0 SS, I06PA09203C0 SS, I06TR09203C0 SS, I06P109203C0 SS | 20% | 155.5d | 2011-06-05 | 2011-09-13 | 108.75d | 0d | Labor General [0.6 h]; Cost |  |  |  |  | IC | C | 06 | GEN | FA | GEN |  |  | B08 |  | TE | R00 | ACF05 | 010 |  |  |  |  |  |  |  |  | FA |  | 100 | 27.14 |  |  |  |  |  |  |  |  |  |  |  |  |  |  |
| I06CO04403C0 |  | IC-06 ; C2 Bracket (Common Zone) |  | 90d | 2011-07-10 A | 2011-10-10 | I06S107807C0, I06S207807C0 FF, I07CO04403C0 SS | 90% | 9d | 2011-06-30 | 2011-10-16 | 18.7d | 0d | FACADE CURTAIN WALL 2 [1382.4 h]; Cost |  |  | I06CO04403C0 |  | IC | C | 06 | CO | FA | 044 | 03 | BILL 8 | B08 | S2 | FC2 | R00 | ACF05 | 044 |  |  |  |  |  |  |  |  | FA |  | 60 | 20 | 0 | 0 | 0 | 0 | 90 |  |  |  |  |  |  |  |  |  |
| I06CO04409C0 |  | IC-06 ; C2 Glazing (Common Zone) |  | 90d | 2011-08-10 A | 2011-10-20 | I06CO04411C0 SS, I06GN02402C0 FF, I06CO04411C0 FF | 80% | 18d | 2011-08-22 | 2011-12-13 | 18.7d | 0d | FACADE CURTAIN WALL 2 [3776.2 h]; FACADE CURTAIN WALL 2 [1207.5 m2]; FACADE TOTAL QUANTITY m2 [1207.5 m2]; Cost |  |  | I06CO04409C0 |  | IC | C | 06 | CO | FA | 044 | 09 | BILL 8 | B08 | S2 | FC2 | R00 | ACF05 | 044 |  |  |  |  |  |  |  |  | FA |  | 60 | 0 | 0 | 0 | 0 | 0 | 80 |  |  |  |  |  |  |  |  |  |
| I06CO04411C0 |  | IC-06 ; C2 Transom & Mullion (Common Zone) |  | 90d | 2011-08-10 A | 2011-10-20 | I06CO04403C0 SS, I05GN02301C0 FF | 80% | 18d | 2011-08-22 | 2011-12-13 | 18.7d | 0d | FACADE CURTAIN WALL 2 [5528.5 h]; Cost |  |  | I06CO04411C0 |  | IC | C | 06 | CO | FA | 044 | 11 | BILL 8 | B08 | S2 | FC2 | R00 | ACF05 | 044 |  |  |  |  |  |  |  |  | FA |  | 60 | 0 | 0 | 0 | 0 | 0 | 80 |  |  |  |  |  |  |  |  |  |
| I06CO04415C0 |  | IC-06 ; SG Catwalk Installation (Common Zone) |  | 89d | 2011-10-22 | 2012-02-09 | IEXCO04403C0 SS |  |  |  |  | 123d | 0d | Labor General [5436.3 h]; Cost |  |  | I05CO04411C0 |  | IC | C | 06 | CO | FA | 044 | 11 | BILL 9 | B08 | S2 | SG | R00 | ACF05 | 044 |  |  |  |  |  |  |  |  | FA |  |  |  |  |  |  |  |  |  |  |  |  |  |  |  |  |  |
| I06SE05509C0 |  | IC-06 ; Steel Staircase & welding/bolting (Stair F5 & 6) (Zone SE) |  | 6d | 2011-10-30 | 2011-11-09 | I05SE05509C0, I06SE03305C0 |  |  |  |  | 127.31d | 0d | STRUCTURAL STEEL [7 T(Fe)]; STRUCTURAL STEEL [91 h]; Cost |  |  | IP3SE03305C0 |  | IC | C | 06 | SE | SW | 055 | 05 | BILL 8 | B08 | S2 | 01 | R00 | ACF03 | 055 |  |  |  |  |  |  |  |  | ST |  |  |  |  |  |  |  |  |  |  |  |  |  |  |  |  |  |
| I06CO04401C0 |  | IC-06 ; S1 Ex. partitions (Common Zone) |  | 26d | 2012-03-07 | 2012-04-07 | I05CO04401C0 SS+6d, I06GN02402C0 FF, AAFCI04401R02 FS+148d |  |  |  |  | 108.75d | 0d | PARTITIONS [1075 m]; FACADE STONE PANEL 1 [251.3 h]; Cost |  |  | CP2CO04401C0 |  | IC | C | 06 | CO | FA | 044 | 01 | BILL 8 | B08 | S1 | FS1 | R00 | ACF05 | 044 |  |  |  |  |  |  |  |  | FA |  |  |  |  |  |  |  |  | 164 | 87 |  |  |  |  |  |  |  |
| I06CO04402C0 |  | IC-06 ; S1 onyx stone facade (Common Zone) |  | 18.88d | 2012-04-07 | 2012-04-29 | I06CO04401C0, AAFCI04401R02 FS+148d |  |  |  |  | 200.62d | 160.88d | FACADE TOTAL QUANTITY m2 [190 m2]; FACADE METAL PANEL 2 [190 m2]; FACADE STONE PANEL 1 [1172.6 h]; Cost |  |  | CP2CO04411C0 |  | IC | C | 06 | CO | FA | 044 | 11 | BILL 8 | B08 | S1 | FS1 | R00 | ACF05 | 044 |  |  |  |  |  |  |  |  | FA |  |  |  |  |  |  |  |  | 167 | 90 |  |  |  |  |  |  |  |
| I06CO04455C0 |  | IC-06 ; S1 Inner Side of External Partition (Common Zone) |  | 15d | 2012-04-07 | 2012-04-24 | I06CO04401C0, I06PA09205C0 SS, AAFCI04401R02 FS+148d |  |  |  |  | 162.5d | 136.5d | FACADE STONE PANEL 1 [251.3 h]; Cost |  |  | DP3CO04415C0 |  | IC | C | 06 | CO | FA | 044 | 15 | BILL 5 | B08 | S1 | FS1 | R00 | ACF05 | 044 |  |  |  |  |  |  |  |  | FA |  |  |  |  |  |  |  |  |  |  |  |  |  |  |  |  |  |
|  | 02 | **Slp Suite, On-CallL Suite, Conf, Lng** |  |  | 2011-04-10 | 2012-12-15 |  |  |  |  |  |  |  |  |  |  |  |  |  |  |  |  |  |  |  |  |  |  |  |  |  |  |  |  |  |  |  |  |  |  |  |  |  |  |  |  |  |  |  |  |  |  |  |  |  |  |  |  |
| I06SL23001C0 |  | IC-06 ; 1st Fix, Inst. of Supports for MEP (Slp Suite) |  | 24d | 2011-04-10 A | 2011-05-30 A | I06S107807C0, I06S207807C0 | 100% |  | 2011-05-11 | 2011-06-08 |  |  | MECHANICAL [577.2 h]; Cost [32540.2 AED] | 32,540.18 | 32,540.18 | I06SL23001C0 | 100 | IC | C | 06 | SL | ME | 230 | 01 | BILL 8 | B08 | S2 | 1F | R00 | ACF04 | 230 |  |  |  |  |  |  |  |  | MEP |  |  |  |  |  |  |  |  |  |  | 1S | M1F |  |  |  |  |  |
| I06SL09201C0 |  | IC-06 ; Metal Studs (Slp Suite) |  | 75d | 2011-05-15 A | 2011-10-20 | I06SL23001C0 SS, I06CO04409C0 FF, I06CO04411C0 FF | 80% | 15d | 2011-07-28 | 2011-10-25 | 59.75d | 0d | PARTITIONS [2598 h]; PARTITIONS - Metal Studs [239 m]; Cost |  |  | I06SL09201C0 | 10 | IC | C | 06 | SL | PT | 092 | 01 | BILL 8 | B08 | S2 | 1F | R00 | ACF06 | 092 |  |  |  |  |  |  |  |  | GP | 87297.89 |  |  |  |  |  |  |  | 313 | 944 |  | PMS |  |  |  |  |  |
| I06SL22019C0 |  | IC-06 ; 1st Fix, Inst of Drainage pipe (ceiling) (Slp Suite) |  | 108d | 2011-05-15 A | 2011-10-31 | I06SL23001C0, I06SL26013C0 SS+12d | 75% | 27d | 2011-08-22 | 2012-01-04 | 74.75d | 0d | PLUMBING [630 h]; Cost [34080.3 AED] | 34,080.3 | 25,560.23 | I06SL22019C0 | 40 | IC | C | 06 | SL | ME | 220 | 19 | BILL 8 | B08 | S2 | 1F | R00 | ACF04 | 220 |  |  |  |  |  |  |  |  | MEP | 13827.54 | 75 | 70 | 0 | 0 | 0 | 0 | 75 |  |  | 1S | M1F | 90 | 100 |  |  |  |
| I06SL27010C0 |  | IC-06 ; 1st Fix, Inst of Trunking for ELV system (Slp Suite) |  | 108d | 2011-05-16 A | 2011-10-25 | I06S107807C0, I06S207807C0, I06SL23001C0, I06SL26001C0 SS+14d | 80% | 21.6d | 2011-07-27 | 2011-12-08 | 74.75d | 0d | ELECTRICAL [914.4 h]; Cost [47960 AED] | 47,960.04 | 38,368.03 | I06SL27010C0 | 15 | IC | C | 06 | SL | ME | 270 | 10 | BILL 8 | B08 | S2 | 1F | R00 | ACF04 | 270 |  |  |  |  |  |  |  |  | MEP | 33388.09 |  |  | 0 | 0 | 0 | 0 |  |  |  | 1S | M1F | 50 | 65 |  |  |  |
| I06SL21111C0 |  | IC-06 ; 1st Fix, Inst of Sprinkler main pipe (Slp Suite) |  | 200d | 2011-05-17 A | 2011-10-23 | I06SL22005C0 SS+14d, I06SL23001C0 | 90% | 20d | 2011-09-18 | 2012-05-16 | 74.75d | 0d | MECHANICAL [264 h]; Cost [14398.4 AED] | 14,398.38 | 12,958.54 | I06SL21111C0 | 10 | IC | C | 06 | SL | ME | 211 | 11 | BILL 8 | B08 | S2 | 1F | R00 | ACF04 | 211 |  |  |  |  |  |  |  |  | MEP | 13370.36 | 90 | 85 |  |  |  |  | 90 |  |  | 1S | M1F | 90 | 85 |  |  |  |
| I06SL26001C0 |  | IC-06 ; 1st Fix, Inst of Trunking/Conduiting (Slp Suite) |  | 200d | 2011-05-17 A | 2011-09-29 A | I06S107807C0, I06S207807C0, I06SL23001C0 | 100% |  | 2011-07-11 | 2012-03-11 |  |  | ELECTRICAL [397.2 h]; Cost [20466.7 AED] | 20,466.68 | 20,466.68 | I06SL26001C0 | 25 | IC | C | 06 | SL | ME | 260 | 01 | BILL 8 | B08 | S2 | 1F | R00 | ACF04 | 260 |  |  |  |  |  |  |  |  | MEP | 11878.37 | 90 | 70 |  |  |  |  |  |  |  | 1S | M1F | 75 | 100 |  |  |  |
| I06SL26013C0 |  | IC-06 ; 1st Fix, Inst of Cable Tray (Slp Suite) |  | 108d | 2011-05-18 A | 2011-10-12 | I06S107807C0, I06S207807C0, I06SL23001C0, I06SL27010C0 SS+10d | 90% | 10.8d | 2011-08-08 | 2011-12-20 | 74.75d | 0d | ELECTRICAL [205.2 h]; Cost [11036 AED] | 11,035.96 | 9,932.36 | I06SL26013C0 | 15 | IC | C | 06 | SL | ME | 260 | 13 | BILL 8 | B08 | S2 | 1F | R00 | ACF04 | 260 |  |  |  |  |  |  |  |  | MEP | 7686.01 | 75 | 70 | 0 | 0 | 0 | 0 |  |  |  | 1S | M1F | 88 | 100 |  |  |  |
| I06SL23023C0 |  | IC-06 ; 1st Fix, Inst of Main Ducting (Slp Suite) |  | 108d | 2011-05-24 A | 2011-10-31 | I06SL23001C0, I06SL23017C0 SS+10d | 75% | 27d | 2011-10-16 | 2012-02-27 | 122.75d | 0d | MECHANICAL [7574.4 h]; Cost [413624 AED] | 413,624.26 | 310,218.2 | I06SL23023C0 | 10 | IC | C | 06 | SL | ME | 230 | 23 | BILL 8 | B08 | S2 | 1F | R00 | ACF04 | 230 |  |  |  |  |  |  |  |  | MEP | 191918.52 |  |  | 0 | 0 | 0 | 0 | 75 |  |  | 1S | M1F | 50 | 70 |  |  |  |
| I06SL22005C0 |  | IC-06 ; 1st Fix, Inst of Water supply pipe (ceiling) (Slp Suite) |  | 108d | 2011-05-26 A | 2011-11-23 | I06SL22019C0 SS+7d, I06SL23001C0 | 60% | 43.2d | 2011-09-01 | 2012-01-12 | 74.75d | 0d | PLUMBING [1670.4 h]; Cost [90220.7 AED] | 90,220.67 | 54,132.4 | I06SL22005C0 | 10 | IC | C | 06 | SL | ME | 220 | 05 | BILL 8 | B08 | S2 | 1F | R00 | ACF04 | 220 |  |  |  |  |  |  |  |  | MEP | 20926.29 | 60 | 40 | 0 | 0 | 0 | 0 | 60 |  |  | 1S | M1F | 75 | 55 |  |  |  |
| I06SL09203C0 |  | IC-06 ; Partitions 1st face (Slp Suite) |  | 60d | 2011-06-13 A | 2011-11-29 | I06SL09201C0 | 50% | 30d | 2011-06-13 | 2011-08-23 | 77.75d | 49d | PARTITIONS [239 m]; PARTITIONS [2031 h]; Cost |  |  | I06SL09203C0 |  | IC | C | 06 | SL | PT | 092 | 03 | BILL 8 | B08 | S2 | 2F | R00 | ACF06 | 092 |  |  |  |  |  |  |  |  | GP | 18802.62 | 50 | 40 |  |  |  |  |  | 314 | 945 |  | P1F |  |  |  |  |  |
| I06SL22011C0 |  | IC-06 ; 2nd Fix, Drainage/Water pipe (wall) (Slp Suite) |  | 66d | 2011-06-13 A | 2011-12-20 | I06SL09201C0 | 30% | 46.2d | 2011-06-13 | 2011-09-01 | 61.55d | 1.8d | PLUMBING [630 h]; Cost [34080.3 AED] | 34,080.3 | 10,224.09 | I06SL22011C0 |  | IC | C | 06 | SL | ME | 220 | 11 | BILL 8 | B08 | S2 | 2F | R00 | ACF07 | 220 |  |  |  |  |  |  |  |  | MEP | 11852.18 |  |  |  |  |  |  |  |  |  | 2n |  | 50 | 65 |  |  |  |
| I06SL23017C0 |  | IC-06 ; 1st Fix, Inst of CHW pipe (Slp Suite) |  | 108d | 2011-06-18 A | 2011-10-31 | I06SL21111C0 SS+14d, I06SL23001C0 | 75% | 27d | 2011-06-18 | 2011-10-25 | 74.75d | 0d | MECHANICAL [2832 h]; Cost [154640 AED] | 154,640.47 | 115,980.35 | I06SL23017C0 |  | IC | C | 06 | SL | ME | 230 | 17 | BILL 8 | B08 | S2 | 1F | R00 | ACF04 | 230 |  |  |  |  |  |  |  |  | MEP | 62783.05 | 70 | 35 | 0 | 0 | 0 | 0 | 75 |  |  | 1S | M1F | 35 | 35 |  |  |  |
| I06SL21117C0 |  | IC-06 ; 1st Fix, Inst of Sprinkler branch pipe (Slp Suite) |  | 200d | 2011-07-10 A | 2011-11-19 | I06SL09201C0, I06SL21111C0 | 90% | 20d | 2011-07-13 | 2012-03-13 | 85.75d | 57d | MECHANICAL [609.6 h]; Cost [33303.7 AED] | 33,303.68 | 29,973.31 | I06SL21117C0 |  | IC | C | 06 | SL | ME | 211 | 17 | BILL 8 | B08 | S2 | 1F | R00 | ACF04 | 211 |  |  |  |  |  |  |  |  | MEP |  | 90 | 15 |  |  |  |  | 90 |  |  | 1S | M1F | 90 | 15 |  |  |  |
| I06SL22027C0 |  | IC-06 ; Final Fix, Inst of All drain (Slp Suite) |  | 21.62d | 2011-08-10 A | 2012-05-16 | I06SL09305C0 | 45% | 11.89d | 2012-08-08 | 2012-09-04 | 173.36d | 144.61d | PLUMBING [630 h]; Cost [34080.3 AED] | 34,080.3 | 15,336.14 | I06SL22027C0 |  | IC | C | 06 | SL | ME | 220 | 27 | BILL 8 | B08 | S2 | FF | R00 | ACF07 | 220 |  |  |  |  |  |  |  |  | MEP |  | 45 | 0 |  |  |  |  |  |  |  | FF |  |  | 45 |  |  |  |
| I06SL23008C0 |  | IC-06 ; 1st Fix, Inst of VCD's/FD's (Slp Suite) |  | 48d | 2011-09-05 A | 2011-12-29 | I06SL23023C0 | 5% | 45.6d | 2011-10-09 | 2011-12-10 | 131.15d | 102.4d | MECHANICAL [910.8 h]; Cost [49161.7 AED] | 49,161.67 | 2,458.08 | I06SL23008C0 |  | IC | C | 06 | SL | ME | 230 | 08 | BILL 8 | B08 | S2 | 1F | R00 | ACF04 | 230 |  |  |  |  |  |  |  |  | MEP |  |  |  |  |  |  |  | 5 |  |  | 1S | M1F | 20 |  | zero |  |  |
| I06SL26009C0 |  | IC-06 ; 2nd Fix, Inst of Wall conduites (Slp Suite) |  | 48d | 2011-10-22 | 2011-12-21 | I06SL09201C0 |  |  |  |  | 59.75d | 0d | ELECTRICAL [397.2 h]; Cost |  |  | I06SL26009C0 |  | IC | C | 06 | SL | ME | 260 | 09 | BILL 8 | B08 | S2 | 2F | R00 | ACF07 | 260 |  |  |  |  |  |  |  |  | MEP |  |  |  |  |  |  |  |  |  |  | 2n |  | 20 |  | zero |  |  |
| I06SL27001C0 |  | IC-06 ; 1st Fix, Wiring/ Cabling work (Slp Suite) |  | 48d | 2011-10-25 | 2011-12-26 | I06SL26001C0, I06SL26013C0, I06SL27010C0 |  |  |  |  | 134.15d | 105.4d | ELECTRICAL [213.6 h]; Cost |  |  | I06SL27001C0 |  | IC | C | 06 | SL | ME | 270 | 01 | BILL 8 | B08 | S2 | 1F | R00 | ACF04 | 270 |  |  |  |  |  |  |  |  | MEP |  |  |  |  |  |  |  |  |  |  | 1S | M1F |  |  |  |  |  |
| I06SL23009C0 |  | IC-06 ; 2nd Fix, Inst of VAV'S CHW connection (Slp Suite) |  | 48d | 2011-11-01 | 2012-01-02 | I06SL23017C0 |  |  |  |  | 74.75d | 0d | MECHANICAL [901.2 h]; Cost |  |  | I06SL23009C0 |  | IC | C | 06 | SL | ME | 230 | 09 | BILL 8 | B08 | S2 | 2F | R00 | ACF07 | 230 |  |  |  |  |  |  |  |  | MEP |  |  |  |  |  |  |  |  |  |  | 2n |  | 25 |  | zero |  |  |
| I06SL08103C0 |  | IC-06 ; Door Frames (Slp Suite) |  | 36d | 2011-12-12 | 2012-01-23 | I06SL09201C0, GNHE08101C0 FS+69d, I06PA08103C0 SS+3d |  |  |  |  | 58.75d | 0d | ASSORTED DOORS [160 h]; Cost |  |  | I06SL08103C0 |  | IC | C | 06 | SL | DO | 081 | 03 | BILL 8 | B08 | S2 | DF | R00 | ACF06 | 081 |  |  |  |  |  |  |  |  |  |  |  |  |  |  |  |  |  | 316 | 947 |  |  |  |  |  | 08 |  |
| I06SL01005C0 |  | IC-06 ; 2nd, Wall Inspection by Consultant (Slp Suite) |  | 0d | 2011-12-22 | 2011-12-22 | I06SL22011C0, I06SL26009C0 |  |  |  |  | 59.75d | 31d | Cost |  |  | I06SL01005C0 |  | IC | C | 06 | SL | ME | 010 | 05 | BILL 8 | B08 | S2 | WI | R00 | ACF07 | 010 |  |  |  |  |  |  |  |  | MEP |  |  |  |  |  |  |  |  |  |  | 2n |  |  |  |  |  |  |
| I06SL05511C0 |  | IC-06 ; Wall reinforcement for MEP/Medical (Slp Suite) |  | 24d | 2011-12-31 | 2012-01-28 | I06SL09201C0, IAFCI22001R02 FS+58d |  |  |  |  | 28.75d | 0d | SECONDARY STEEL [49 h]; Cost |  |  | I06SL05511C0 |  | IC | C | 06 | SL | SW | 055 | 11 | BILL 8 | B08 | S2 | 03 | R00 | ACF03 | b |  |  |  |  |  |  |  |  |  |  |  |  |  |  |  |  |  |  |  |  |  |  |  |  |  |  |
| I06SL23015C0 |  | IC-06 ; 2nd Fix, Insulation of CHW pipe & Duct (Slp Suite) |  | 54d | 2012-01-03 | 2012-03-06 | I06SL23009C0, I06SL23017C0, I06SL23023C0 |  |  |  |  | 74.75d | 46d | MECHANICAL [3075.6 h]; Cost |  |  | I06SL23015C0 |  | IC | C | 06 | SL | ME | 230 | 15 | BILL 8 | B08 | S2 | 2F | R00 | ACF07 | 230 |  |  |  |  |  |  |  |  | MEP |  |  |  |  |  |  |  |  |  |  | 2n |  | 30 |  | zero |  |  |
| I06SL09205C0 |  | IC-06 ; Partitions Closing (Slp Suite) |  | 48d | 2012-01-29 | 2012-03-25 | I06SL01005C0, I06SL05511C0, I06SL09203C0, I06SL22005C0, I06SL22019C0, IAFOA09210C1 FF, I06SL08103C0 FF, I06SL21117C0 |  |  |  |  | 28.75d | 0d | PARTITIONS [239 m]; PARTITIONS [2604 h]; Cost |  |  | I06SL09205C0 |  | IC | C | 06 | SL | PT | 092 | 05 | BILL 8 | B08 | S2 | FF | R00 | ACF06 | 092 |  |  |  |  |  |  |  |  | GP |  |  |  |  |  |  |  |  | 315 | 946 |  | P2F |  |  |  |  |  |
| I06SL07103C0 |  | IC-06 ; Waterproofing (Slp Suite) |  | 12d | 2012-03-26 | 2012-04-08 | I06SL08103C0, I06SL09205C0 |  |  |  |  | 113.25d | 0d | THERMAL & MOISTURE [80 h]; THERMAL & MOISTURE [503 m2]; Cost |  |  | I06SL07103C0 |  | IC | C | 06 | SL | FF | 071 | 03 | BILL 8 | B08 | S2 | 01 | R00 | ACF03 | 071 |  |  |  |  |  |  |  |  |  |  |  |  |  |  |  |  |  | 105 | 999 |  |  |  |  |  |  |  |
| I06SL09901C0 |  | IC-06 ; Wall Prime & 1st coat (Slp Suite) |  | 30d | 2012-03-26 | 2012-04-29 | I06SL09205C0 |  |  |  |  | 28.75d | 0d | WALL PAINT [489 h]; WALL PAINT [609 m2]; Cost |  |  | I06SL09901C0 |  | IC | C | 06 | SL | PA | 099 | 01 | BILL 8 | B08 | S2 | 01 | R00 | ACF06 | 099 |  |  |  |  |  |  |  |  |  |  |  |  |  |  |  |  |  | 328 | 956 |  |  |  |  |  |  |  |
| I06SL26005C0 |  | IC-06 ; 2nd Fix, Wiring for Power/Lighting/Emergency (Slp Suite) |  | 48d | 2012-03-26 | 2012-05-20 | I06SL09205C0 |  |  |  |  | 100.75d | 0d | ELECTRICAL [213.6 h]; Cost |  |  | I06SL26005C0 |  | IC | C | 06 | SL | ME | 260 | 05 | BILL 8 | B08 | S2 | 2F | R00 | ACF07 | 260 |  |  |  |  |  |  |  |  | MEP |  |  |  |  |  |  |  |  |  |  | 2n |  |  |  |  |  |  |
| I06SL26007C0 |  | IC-06 ; 2nd Fix, Cable Pulling (Slp Suite) |  | 48d | 2012-03-26 | 2012-05-20 | I06SL09201C0 SS+6d, I06SL09205C0 |  |  |  |  | 136.75d | 108d | ELECTRICAL [2858.4 h]; Cost |  |  | I06SL26007C0 |  | IC | C | 06 | SL | ME | 260 | 07 | BILL 8 | B08 | S2 | 2F | R00 | ACF07 | 260 |  |  |  |  |  |  |  |  | MEP |  |  |  |  |  |  |  |  |  |  | 2n |  | 10 |  | zero |  |  |
| I06SL26053C0 |  | IC-06 ; 2nd Fix, Wiring / Cabling (Slp Suite) |  | 48d | 2012-03-26 | 2012-05-20 | I06SL09203C0, I06SL09205C0 |  |  |  |  | 46.75d | 18d | ELECTRICAL [213.6 h]; Cost |  |  | I06SL26053C0 |  | IC | C | 06 | SL | ME | 260 | 53 | BILL 8 | B08 | S2 | 2F | R00 | ACF07 | 260 |  |  |  |  |  |  |  |  | MEP |  |  |  |  |  |  |  |  | 389 | 977 | 2n |  |  |  |  |  |  |
| I06SL27020C0 |  | IC-06 ; 2nd Fix, Inst of ELV Equipment (Panels) (Slp Suite) |  | 60d | 2012-03-26 | 2012-06-03 | I06SL09205C0 |  |  |  |  | 88.75d | 42d | ELECTRICAL [1041.6 h]; Cost |  |  | I06SL27020C0 |  | IC | C | 06 | SL | ME | 270 | 20 | BILL 8 | B08 | S2 | 2F | R00 | ACF04 | 270 |  |  |  |  |  |  |  |  | MEP |  |  |  |  |  |  |  |  |  |  | 2n |  |  |  |  |  | E |
| I06SL26011C0 |  | IC-06 ; 2nd Fix, Inst of Equipment (DB) (Slp Suite) |  | 66d | 2012-04-05 | 2012-06-21 | I06SL09205C0, I06PA26011C0 SS+3d |  |  |  |  | 42.25d | 0d | ELECTRICAL [1736.4 h]; Cost |  |  | I06SL26011C0 |  | IC | C | 06 | SL | ME | 260 | 11 | BILL 8 | B08 | S2 | 2F | R00 | ACF04 | 260 |  |  |  |  |  |  |  |  | MEP |  |  |  |  |  |  |  |  |  |  | 2n |  |  |  |  |  | E |
| I06SL09305C0 |  | IC-06 ; Ceramic floor tile (Slp Suite) |  | 20.75d | 2012-04-09 | 2012-05-02 | I06SL07103C0 |  |  |  |  | 113.25d | 0d | CERAMIC FLOOR TILES [64 h]; CERAMIC FLOOR TILES [34 m2]; Cost |  |  | I06SL09305C0 |  | IC | C | 06 | SL | FF | 093 | 05 | BILL 8 | B08 | S2 | 02 | R00 | ACF06 | CT |  |  |  |  |  |  |  |  |  |  |  |  |  |  |  |  |  | 106 | 1000 |  |  |  |  |  |  |  |
| I06SL05501C0 |  | IC-06 ; Handrails & balustrade (Slp Suite) |  | 30.5d | 2012-04-30 | 2012-06-04 | I06SL09901C0 |  |  |  |  | 70.25d | 41.5d | SECONDARY STEEL [264 h]; Cost |  |  | I06SL05501C0 |  | IC | C | 06 | SL | SW | 055 | 01 | BILL 8 | B08 | S2 | 01 | R00 | ACF03 | a |  |  |  |  |  |  |  |  |  |  |  |  |  |  |  |  |  |  |  |  |  |  |  |  |  |  |
| I06SL09501C0 |  | IC-06 ; Ceiling Grid and Service Tile (Slp Suite) |  | 36d | 2012-04-30 | 2012-06-10 | I06SL09205C0, I06SL21117C0, I06SL23008C0, I06SL23009C0, I06SL23015C0, I06SL27001C0, I06SL26053C0 FF, I06SL09901C0 |  |  |  |  | 28.75d | 0d | CEILING GRID FOR GYPSUM [1504.83 h]; CEILING GRID FOR GYPSUM [128.64 m2]; Cost |  |  | I06SL09501C0 |  | IC | C | 06 | SL | CE | 095 | 01 | BILL 8 | B08 | S2 | 01 | R00 | ACF06 | 095 |  |  |  |  |  |  |  |  |  |  |  |  |  |  |  |  |  | 323 | 952 |  |  |  |  |  |  |  |
| I06SL22025C0 |  | IC-06 ; Final Fix, Inst of Sanitary Ware (Slp Suite) |  | 36d | 2012-05-02 | 2012-06-13 | I06SL09205C0, I06SL09305C0, A10230 FS+148d |  |  |  |  | 113.25d | 0d | PLUMBING [1315.2 h]; Cost |  |  | I06SL22025C0 |  | IC | C | 06 | SL | ME | 220 | 25 | BILL 8 | B08 | S2 | FF | R00 | ACF07 | 220 |  |  |  |  |  |  |  |  | MEP |  |  |  |  |  |  |  |  |  |  | FF |  |  |  |  |  |  |
| I06SL26015C0 |  | IC-06 ; Final Fix, Termination & Gladding of Cables (Slp Suite) |  | 36d | 2012-05-21 | 2012-07-02 | I06SL26005C0 |  |  |  |  | 100.75d | 42d | ELECTRICAL [158.4 h]; Cost |  |  | I06SL26015C0 |  | IC | C | 06 | SL | ME | 260 | 15 | BILL 8 | B08 | S2 | FF | R00 | ACF07 | 260 |  |  |  |  |  |  |  |  | MEP |  |  |  |  |  |  |  |  |  |  | FF |  |  |  |  |  |  |
| I06SL09202C0 |  | IC-06 ; Vertical folding acoustical screen (Slp Suite) |  | 20d | 2012-06-11 | 2012-07-04 | I06SL09501C0 |  |  |  |  | 144d | 115.25d | PARTITIONS [887 h]; Cost |  |  | I06SL09201C0 |  | IC | C | 06 | SL | FI | 092 | 02 | BILL 8 | B08 | S2 | 02 | R00 | ACF06 | 092 |  |  |  |  |  |  |  |  | GP |  |  |  |  |  |  |  |  | 313 | 944 |  |  |  |  |  |  |  |
| I06SL09601C0 |  | IC-06 ; Flooring (Terrazzo) (Slp Suite) |  | 36d | 2012-06-11 | 2012-07-23 | I06SL09501C0, I06SL05501C0 FF |  |  |  |  | 28.75d | 0d | TERRAZO FLOOR [528 h]; TERRAZO FLOOR [289 m2]; Cost |  |  | I06SL09601C0 |  | IC | C | 06 | SL | FF | 096 | 01 | BILL 8 | B08 | S2 | 07 | R00 | ACF06 | TZ |  |  |  |  |  |  |  |  |  |  |  |  |  |  |  |  |  | 326 | 955 |  |  |  |  |  |  |  |
| I06SL09903C0 |  | IC-06 ; Wall Final Paint (Slp Suite) |  | 30d | 2012-06-11 | 2012-07-16 | I06SL09901C0, I06SL09905C0, I06SL09501C0 |  |  |  |  | 134d | 72d | WALL PAINT [263 h]; WALL PAINT [328 m2]; Cost |  |  | I06SL09903C0 |  | IC | C | 06 | SL | PA | 099 | 03 | BILL 8 | B08 | S2 | 02 | R00 | ACF06 | 099 |  |  |  |  |  |  |  |  |  |  |  |  |  |  |  |  |  | 329 | 957 |  |  |  |  |  |  |  |
| I06SL09905C0 |  | IC-06 ; Ceiling Prime & 1st coat (Slp Suite) |  | 0d | 2012-06-11 | 2012-06-11 | I06SL09501C0 |  |  |  |  | 134d | 0d | Cost |  |  | I06SL09905C0 |  | IC | C | 06 | SL | PA | 099 | 05 | BILL 8 | B08 | S2 | 01 | R00 | ACF06 | 099 |  |  |  |  |  |  |  |  |  |  |  |  |  |  |  |  |  | 330 | 958 |  |  |  |  |  |  |  |
| I06SL21115C0 |  | IC-06 ; 2nd Fix, Inst of Sprinkler droppers (Slp Suite) |  | 48d | 2012-06-11 | 2012-08-06 | I06SL09501C0 |  |  |  |  | 70.75d | 0d | MECHANICAL [800.4 h]; Cost |  |  | I06SL21115C0 |  | IC | C | 06 | SL | ME | 211 | 15 | BILL 8 | B08 | S2 | 2F | R00 | ACF07 | 211 |  |  |  |  |  |  |  |  | MEP |  |  |  |  |  |  |  |  |  |  | 2n |  |  |  |  |  |  |
| I06SL23021C0 |  | IC-06 ; 2nd Fix, Inst of Flexible Duct & Plenum boxes (Slp Suite) |  | 48d | 2012-06-11 | 2012-08-06 | I06SL09205C0, I06SL09501C0 |  |  |  |  | 70.75d | 0d | MECHANICAL [72 h]; Cost |  |  | I06SL23021C0 |  | IC | C | 06 | SL | ME | 230 | 21 | BILL 8 | B08 | S2 | 2F | R00 | ACF07 | 230 |  |  |  |  |  |  |  |  | MEP |  |  |  |  |  |  |  |  |  |  | 2n |  |  |  |  |  |  |
| I06SL26017C0 |  | IC-06 ; Final Fix, Inst of Ceiling rose (Slp Suite) |  | 36d | 2012-06-11 | 2012-07-23 | I06SL09501C0 |  |  |  |  | 58.75d | 0d | ELECTRICAL [33.6 h]; Cost |  |  | I06SL26017C0 |  | IC | C | 06 | SL | ME | 260 | 17 | BILL 8 | B08 | S2 | FF | R00 | ACF07 | 260 |  |  |  |  |  |  |  |  | MEP |  |  |  |  |  |  |  |  |  |  | FF |  |  |  |  |  |  |
| I06SL27002C0 |  | IC-06 ; 2nd Fix, Wiring Droppers (Slp Suite) |  | 48d | 2012-06-11 | 2012-08-06 | I06SL09501C0 |  |  |  |  | 64.75d | 0d | ELECTRICAL [213.6 h]; Cost |  |  | I06SL27002C0 |  | IC | C | 06 | SL | ME | 270 | 02 | BILL 8 | B08 | S2 | 2F | R00 | ACF07 | 270 |  |  |  |  |  |  |  |  | MEP |  |  |  |  |  |  |  |  |  |  | 2n |  |  |  |  |  |  |
| I06SL22021C0 |  | IC-06 ; Final Fix, Terminate Sanitary Ware & Appliances (Slp Suite) |  | 36d | 2012-06-13 | 2012-07-26 | I06SL22011C0, I06SL22025C0 |  |  |  |  | 113.25d | 84.5d | PLUMBING [1315.2 h]; Cost |  |  | I06SL22021C0 |  | IC | C | 06 | SL | ME | 220 | 21 | BILL 8 | B08 | S2 | FF | R00 | ACF07 | 220 |  |  |  |  |  |  |  |  | MEP |  |  |  |  |  |  |  |  |  |  | FF |  |  |  |  |  |  |
| I06SL21113C0 |  | IC-06 ; Final Fix, Inst of Sprinklers head/ Extinguisher (Slp Suite) |  | 36d | 2012-06-19 | 2012-07-30 | I06SL09501C0, I06SL21115C0 SS+6d |  |  |  |  | 76.75d | 18d | MECHANICAL [152.4 h]; Cost |  |  | I06SL21113C0 |  | IC | C | 06 | SL | ME | 211 | 13 | BILL 8 | B08 | S2 | FF | R00 | ACF07 | 211 |  |  |  |  |  |  |  |  | MEP |  |  |  |  |  |  |  |  |  |  | FF |  |  |  |  |  |  |
| I06SL23019C0 |  | IC-06 ; Final Fix, Inst of Grilles & Diffusers (Slp Suite) |  | 36d | 2012-06-19 | 2012-07-30 | I06SL09501C0, I06SL23021C0 SS+6d |  |  |  |  | 76.75d | 18d | MECHANICAL [757.2 h]; Cost |  |  | I06SL23019C0 |  | IC | C | 06 | SL | ME | 230 | 19 | BILL 8 | B08 | S2 | FF | R00 | ACF07 | 230 |  |  |  |  |  |  |  |  | MEP |  |  |  |  |  |  |  |  |  |  | FF |  |  |  |  |  |  |

| ID | WBS | Activity | Duration | Start | Finish | Predecessors | Complete | Remaining | Planned start | Planned finish | Total float | Free float | Resources | Cost | Actual cost | change id | CCAD BUILDING(SET) | CCAD PHASE(SET) | CCAD FLOOR(SET) | CCAD ZONE(SET) | CCAD WORK(SET) | CCAD SECTION(SET) | CCAD SERIAL No.(SET) | CCAD SUB ZONE MEP(SET) | CCAD CBS(SET) | CCAD BILL(SET) | CCAD HANDOVER(SET) | CCAD TAG(SET) | CCAD REV(SET) | CCADACF (SET) | CCAD CSA | CCAD SSCF | Change Order # | NEW ACTIVITY ID | CCAD DIVISION(SET) | RENZ % COMPLETE | Act Selector % | user_number8 | user_integer1 | user_integer2 | user_number7 | July2011 Target% Complete | Claimed This Month | N_% | P_811 | P_711 | R3 Partitions | U% | FILTER | CCAD MEQ | R3 Finish |
| --- | --- | --- | --- | --- | --- | --- | --- | --- | --- | --- | --- | --- | --- | --- | --- | --- | --- | --- | --- | --- | --- | --- | --- | --- | --- | --- | --- | --- | --- | --- | --- | --- | --- | --- | --- | --- | --- | --- | --- | --- | --- | --- | --- | --- | --- | --- | --- | --- | --- | --- | --- |
| I06SL26003C0 |  | IC-06 ; Final Fix, Inst of Light fittings (Slp Suite) | 54d | 2012-06-19 | 2012-08-22 | I06SL09501C0, I06SL26017C0 SS+6d |  |  |  |  | 58.75d | 0d | ELECTRICAL [9577.2 h]; Cost |  |  | I06SL26003C0 | IC | C | 06 | SL | ME | 260 | 03 | FF | BILL 8 | B08 | S2 | FF | R00 | ACF07 | MEP | 260 |  |  |  |  |  |  |  |  |  |  |  |  |  |  |  |  |  |  |  |
| I06SL27030C0 |  | IC-06 ; Final Fix, Inst of ELV device (Detector/Speaker) (Slp Suite) | 48d | 2012-06-19 | 2012-08-13 | I06SL09501C0, I06SL27002C0 SS+6d |  |  |  |  | 64.75d | 6d | ELECTRICAL [1707.6 h]; Cost |  |  | I06SL27030C0 | IC | C | 06 | SL | ME | 270 | 30 | FF | BILL 8 | B08 | S2 | FF | R00 | ACF07 | MEP | 270 |  |  |  |  |  |  |  |  |  |  |  |  |  |  |  |  |  |  |  |
| I06SL08107C0 |  | IC-06 ; Doors (Slp Suite) | 36d | 2012-07-10 | 2012-08-22 | I06SL08103C0, I06SL09501C0, I06SL09601C0 SS+24d, I06SL09901C0 |  |  |  |  | 84.25d | 0d | ASSORTED DOORS [430 h]; ASSORTED DOORS [43 no]; Cost |  |  | I06SL08107C0 | IC | C | 06 | SL | DO | 081 | 07 |  | BILL 8 | B08 | S2 | DR | R00 | ACF06 |  | 081 | 317 | 948 | 08 |  |  |  |  |  |  |  |  |  |  |  |  |  |  |  |  |
| I06SL06101C0 |  | IC-06 ; Wood / caseworks (Slp Suite) | 54d | 2012-07-24 | 2012-09-26 | I06CO04409C0, I06SL09501C0, I06SL09601C0, I06SL09901C0, IAFWA00103M0 |  |  |  |  | 28.75d | 0d | WOOD WORK/CASEWORK [155.53 no]; WOOD WORK/CASEWORK [1248 h]; Cost |  |  | I06SL06101C0 | IC | C | 06 | SL | WO | 061 | 01 |  | BILL 8 | B08 | S2 | WW | R00 | ACF06 |  | 061 | 332 | 960 |  |  |  |  |  |  |  |  |  |  |  |  |  |  |  |  |  |
| I06SL09701C0 |  | IC-06 ; Wall finishes (ST, WD, WC) (Slp Suite) | 36d | 2012-07-24 | 2012-09-05 | I06SL26011C0, I06SL27020C0, I06SL09601C0 |  |  |  |  | 46.75d | 0d | ASSORTED WALL FINISH [258 h]; ASSORTED WALL FINISH [295 m2]; Cost |  |  | I06SL09701C0 | IC | C | 06 | SL | WF | 097 | 01 |  | BILL 8 | B08 | S2 | 01 | R00 | ACF06 |  | 097 | 105 | 1002 |  |  |  |  |  |  |  |  |  |  |  |  |  |  |  |  |  |
| I06SL01006C0 |  | IC-06 ; 2nd, Ceiling Inspection by Consultants (Slp Suite) | 0d | 2012-08-23 | 2012-08-23 | I06SL21115C0, I06SL23009C0, I06SL23015C0, I06SL27002C0, I06SL09501C0, I06SL21113C0, I06SL23019C0, I06SL26003C0, I06SL26017C0, I06SL27030C0, I06SL26015C0 |  |  |  |  | 58.75d | 30d | Cost |  |  | I06SL01006C0 | IC | C | 06 | SL | ME | 010 | 06 | 2n | BILL 8 | B08 | S2 | CI | R00 | ACF07 | MEP | 010 |  |  |  |  |  |  |  |  |  |  |  |  |  |  |  |  |  |  |  |
| I06SL08709C0 |  | IC-06 ; Ironmongery (Slp Suite) | 19.75d | 2012-08-23 | 2012-09-15 | I06SL08107C0 |  |  |  |  | 84.25d | 55.5d | IRONMONGERY [200 h]; IRONMONGERY [20 no]; Cost |  |  | I06SL08709C0 | IC | C | 06 | SL | DO | 087 | 09 |  | BILL 8 | B08 | S2 | IM | R00 | ACF06 |  | 087 | 322 | 951 | 08 |  |  |  |  |  |  |  |  |  |  |  |  |  |  |  |  |
| I06SL11001C0 |  | IC-06 ; Wall Protection (WP, CG, WG, FCG) (Slp Suite) | 24d | 2012-09-06 | 2012-10-03 | I06SL09701C0, I06SL09903C0 SS |  |  |  |  | 68d | 39.25d | FF&E [32 h]; Cost |  |  | I06SL11001C0 | IC | C | 06 | SL | WF | 110 | 01 |  | BILL 8 | B08 | S2 | 03 | R00 | ACF08 |  | b | 326 | 1001 |  |  |  |  |  |  |  |  |  |  |  |  |  |  |  |  |  |
| I06SL09503C0 |  | IC-06 ; Ceiling closure - ACT/Gypsum (Slp Suite) | 21.25d | 2012-09-27 | 2012-10-22 | I06SL01006C0, I06SL21115C0, I06SL26005C0, I06SL27001C0, I06SL27002C0, IAFOA09509C1 FF, I06SL06101C0, I06SL09701C0, I06SL23021C0, I06SL26053C0, I06SL26007C0 |  |  |  |  | 28.75d | 0d | ASSORTED CEILING FINISH [308.73 h]; CEILING GYPSUM [42.23 h]; ASSORTED CEILING FINISH [502 m2]; CEILING GYPSUM [129 m2]; Cost |  |  | I06SL09503C0 | IC | C | 06 | SL | CE | 095 | 03 |  | BILL 8 | B08 | S2 | 02 | R00 | ACF06 |  | 095 | 324 | 953 |  |  |  |  |  |  |  |  |  |  |  |  |  |  |  |  |  |
| I06SL09670C1 |  | IC-06, Carpet Tile Finish (Slp Suite/On Call Suite, Conference, Lng) | 0d | 2012-10-22 | 2012-10-22 | I06SL09903C0 SS, I06SL09907C0 SS |  |  |  |  | 52.75d | 24d | Cost |  |  |  | IC | C | 06 | SL | FF | 096 |  |  |  | B08 |  |  | R00 | ACF06 | CPT | CPT |  |  |  |  |  |  |  |  |  |  |  |  |  |  |  |  |  |  |  |
| I06SL09907C0 |  | IC-06 ; Ceiling Final paint (Slp Suite) | 0d | 2012-10-22 | 2012-10-22 | I06SL09601C0 SS+24d, I06SL09905C0, I06SL09503C0 |  |  |  |  | 52.75d | 0d | Cost |  |  | I06SL09907C0 | IC | C | 06 | SL | PA | 099 | 07 |  | BILL 8 | B08 | S2 | 02 | R00 | ACF06 |  | 099 | 331 | 959 |  |  |  |  |  |  |  |  |  |  |  |  |  |  |  |  |  |
| I06SL11003C0 |  | IC-06 ; FF & E (Slp Suite) | 12d | 2012-10-22 | 2012-11-07 | I06SL09601C0 SS+24d, I06SL06101C0, I06SL09503C0 |  |  |  |  | 40.75d | 12d | FF&E [328 h]; FF&E [174.59 no]; Cost |  |  | I06SL11003C0 | IC | C | 06 | SL | WO | 110 | 03 |  | BILL 8 | B08 | S2 | 04 | R00 | ACF08 |  | a | 333 | 961 |  |  |  |  |  |  |  |  |  |  |  |  |  |  |  |  |  |
| I06SL26019C0 |  | IC-06 ; Final Fix, Inst of Switch/Sockets (Slp Suite) | 12d | 2012-10-22 | 2012-11-07 | I06SL09901C0, I06SL09503C0 |  |  |  |  | 28.75d | 0d | ELECTRICAL [164.4 h]; Cost |  |  | I06SL26019C0 | IC | C | 06 | SL | ME | 260 | 19 | FF | BILL 8 | B08 | S2 | FF | R00 | ACF07 | MEP | 260 |  |  |  |  |  |  |  |  |  |  |  |  |  |  |  |  |  |  |  |
|  | 10 | **Precommissioning Tesing & snagging (Slp Suite, On-CallL Suite, Conf, Lng)** |  | 2012-11-07 | 2012-12-15 |  |  |  |  |  |  |  |  |  |  |  |  |  |  |  |  |  |  |  |  |  |  |  |  |  |  |  |  |  |  |  |  |  |  |  |  |  |  |  |  |  |  |  |  |  |  |
| I06TS01801C0 |  | IC-06 ; MEP de-snag, FIREM sign-off | 12d | 2012-11-07 | 2012-11-22 | I06SL22025C0, I06SL22027C0, I06SL26015C0, I06SL22021C0, I06SL21113C0, I06SL23019C0, I06SL26017C0, I06SL26003C0, I06SL27030C0, I06SL26019C0 |  |  |  |  | 28.75d | 0d | TESTING & COMMISSIONING [2040 h]; Cost |  |  | I06TS01801C0 | IC | C | 06 | TS | SC | 018 | 01 |  | BILL 8 | B08 | S2 | 01 | R00 | ACF07 |  | 018 |  |  |  |  |  |  |  |  |  |  |  |  |  |  |  |  |  |  |  |
| I06TS01807C0 |  | IC-06 ; Touch-up & Clean / JV inspection /CIR /De-snag | 18d | 2012-11-22 | 2012-12-15 | I06CO04402C0, I06CO04403C0, I06CO04409C0, I06CO04411C0, I06SL05501C0, I06SL05511C0, I06SL06101C0, I06SL07103C0, I06SL08103C0, I06SL08107C0, I06SL08709C0, I06SL09201C0, I06SL09202C0, I06SL09203C0, I06SL09205C0, I06SL09305C0, I06SL09501C0, I06SL09503C0, I06SL09601C0, I06SL09701C0, I06SL09901C0, I06SL09903C0, I06SL09905C0, I06SL09907C0, I06SL11001C0, I06SL11003C0, I06SL21113C0, I06SL22021C0, I06SL22025C0, I06SL22027C0, I06SL23019C0, I06SL26003C0, I06SL26015C0, I06SL26017C0, I06SL26019C0, I06SL27030C0, I06TS01801C0, I06SL09670C1, I06P109671C1, I06P209672C1 |  |  |  |  | 28.75d | 0d | TESTING & COMMISSIONING [128 h]; Cost |  |  | I06TS01802C0 | IC | C | 06 | TS | SC | 018 | 02 |  | BILL 8 | B08 | S2 | 02 | R00 | ACF07 |  | 018 |  |  |  |  |  |  |  |  |  |  |  |  |  |  |  |  |  |  |  |
| I06TS01811C0 |  | IC-06 ; Consultant's final de-snag inspection | 0d | 2012-12-15 | 2012-12-15 | I06TS01807C0 |  |  |  |  | 28.75d | 7.75d | Cost |  |  | I06TS01803C0 | IC | C | 06 | TS | SC | 018 | 03 |  | BILL 8 | B08 | S2 | 03 | R00 | ACF07 |  | 018 |  |  |  |  |  |  |  |  |  |  |  |  |  |  |  |  |  |  |  |
|  | 03 | **PAT RM-1** |  | 2011-05-09 | 2012-12-17 |  |  |  |  |  |  |  |  |  |  |  |  |  |  |  |  |  |  |  |  |  |  |  |  |  |  |  |  |  |  |  |  |  |  |  |  |  |  |  |  |  |  |  |  |  |  |
| I06P123001C0 |  | IC-06 ; 1st Fix, Inst. of Supports for MEP (PAT RM-1) | 23d | 2011-05-09 A | 2011-05-24 A | I06S107807C0 | 100% |  | 2011-06-04 | 2011-07-02 |  |  | MECHANICAL [577.2 h]; Cost [32540.2 AED] | 32,540.18 | 32,540.18 | I06P123001C0 | IC | C | 06 | P1 | ME | 230 | 01 | 1S | BILL 8 | B08 | S2 | 1F | R00 | ACF04 | MEP | 230 |  |  |  | 100 | M1F |  |  |  |  |  |  |  |  |  |  |  |  |  |  |
| I06P126013C0 |  | IC-06 ; 1st Fix, Inst of Cable Tray (PAT RM-1) | 108d | 2011-05-12 A | 2011-10-12 | I06P123001C0, I06P127010C0 SS+12d, I06S207807C0 | 90% | 10.8d | 2011-08-02 | 2011-12-14 | 75d | 0d | ELECTRICAL [205.2 h]; Cost [11036 AED] | 11,035.96 | 9,932.36 | I06P126013C0 | IC | C | 06 | P1 | ME | 260 | 13 | 1S | BILL 8 | B08 | S2 | 1F | R00 | ACF04 | MEP | 260 |  |  |  | 25 | M1F | 0 | 0 | 0 | 0 | 100 | 6405.01 | 100 | 65 | 60 |  |  |  |  |  |
| I06P109201C0 |  | IC-06 ; Metal Studs (PAT RM-1) | 75d | 2011-05-15 A | 2011-11-10 | I06P123001C0 SS, I06PA09201C0 FF, IAFCI09201R02 FS+58d, I06CO04409C0 FF, I06CO04411C0 FF | 80% | 15d | 2011-07-14 | 2011-10-11 | 42d | 0d | PARTITIONS [4821 h]; PARTITIONS - Metal Studs [444 m]; Cost |  |  | I06P109201C0 | IC | C | 06 | P1 | PT | 092 | 01 |  | BILL 8 | B08 | S2 | 1F | R00 | ACF06 | GP | 092 | 313 | 944 |  | 10 | PMS |  |  |  |  |  | 162271.37 |  |  |  | R3 |  |  |  |  |
| I06P121111C0 |  | IC-06 ; 1st Fix, Inst of Sprinkler main pipe (PAT RM-1) | 200d | 2011-05-16 A | 2011-10-23 | I06P122005C0 SS+14d, I06P123001C0 | 90% | 20d | 2011-09-15 | 2012-05-14 | 75d | 0d | MECHANICAL [264 h]; Cost [14398.4 AED] | 14,398.38 | 12,958.54 | I06P121111C0 | IC | C | 06 | P1 | ME | 211 | 11 | 1S | BILL 8 | B08 | S2 | 1F | R00 | ACF04 | MEP | 211 |  |  |  | 30 | M1F |  |  |  |  | 40 | 10027.77 | 65 | 90 | 65 |  | 85 |  |  |  |
| I06P122019C0 |  | IC-06 ; 1st Fix, Inst of Drainage pipe (ceiling) (PAT RM-1) | 120d | 2011-05-16 A | 2011-10-27 | I06P123001C0, I06P126013C0 SS+12d | 80% | 24d | 2011-08-16 | 2012-01-12 | 75d | 0d | PLUMBING [630 h]; Cost [34080.3 AED] | 34,080.3 | 27,264.24 | I06P122019C0 | IC | C | 06 | P1 | ME | 220 | 19 | 1S | BILL 8 | B08 | S2 | 1F | R00 | ACF04 | MEP | 220 |  |  |  | 40 | M1F | 0 | 0 | 0 | 0 | 70 | 13827.54 | 100 |  |  |  | 80 |  |  |  |
| I06P126001C0 |  | IC-06 ; 1st Fix, Inst of Trunking/Conduiting (PAT RM-1) | 200d | 2011-05-22 A | 2011-10-23 | I06P123001C0, I06S207807C0 | 90% | 20d | 2011-07-03 | 2012-03-03 | 75d | 0d | ELECTRICAL [397.2 h]; Cost [20466.7 AED] | 20,466.68 | 18,420.01 | I06P126001C0 | IC | C | 06 | P1 | ME | 260 | 01 | 1S | BILL 8 | B08 | S2 | 1F | R00 | ACF04 | MEP | 260 |  |  |  | 10 | M1F |  |  |  |  | 50 | 15441.89 | 75 | 90 | 60 |  |  |  |  |  |
| I06P127010C0 |  | IC-06 ; 1st Fix, Inst of Trunking for ELV system (PAT RM-1) | 108d | 2011-05-23 A | 2011-10-25 | I06P123001C0, I06P126001C0 SS+14d, I06S207807C0 | 80% | 21.6d | 2011-07-19 | 2011-11-29 | 75d | 0d | ELECTRICAL [914.4 h]; Cost [47960 AED] | 47,960.04 | 38,368.03 | I06P127010C0 | IC | C | 06 | P1 | ME | 270 | 10 | 1S | BILL 8 | B08 | S2 | 1F | R00 | ACF04 | MEP | 270 |  |  |  | 20 | M1F | 0 | 0 | 0 | 0 | 75 | 30605.75 | 65 |  |  |  |  |  |  |  |
| I06P123023C0 |  | IC-06 ; 1st Fix, Inst of Main Ducting (PAT RM-1) | 108d | 2011-05-24 A | 2011-12-25 | I06P123001C0, I06P123017C0 SS+10d | 75% | 27d | 2011-10-13 | 2012-02-25 | 78d | 0d | MECHANICAL [7574.4 h]; Cost [413624 AED] | 413,624.26 | 310,218.2 | I06P123023C0 | IC | C | 06 | P1 | ME | 230 | 23 | 1S | BILL 8 | B08 | S2 | 1F | R00 | ACF04 | MEP | 230 |  |  |  | 15 | M1F | 0 | 0 | 0 | 0 | 50 | 167928.71 | 70 |  |  |  | 75 |  |  |  |
| I06P123017C0 |  | IC-06 ; 1st Fix, Inst of CHW pipe (PAT RM-1) | 108d | 2011-06-02 A | 2011-12-25 | I06P121111C0 SS+14d, I06P123001C0, I06P105503C0 FF+18d | 75% | 27d | 2011-07-02 | 2011-11-10 | 72d | 0d | MECHANICAL [2832 h]; Cost [154640 AED] | 154,640.47 | 115,980.35 | I06P123017C0 | IC | C | 06 | P1 | ME | 230 | 17 | 1S | BILL 8 | B08 | S2 | 1F | R00 | ACF04 | MEP | 230 |  |  |  |  | M1F | 0 | 0 | 0 | 0 | 45 | 62783.05 | 50 | 70 | 50 |  | 75 |  |  |  |
| I06P122005C0 |  | IC-06 ; 1st Fix, Inst of Water supply pipe (ceiling) (PAT RM-1) | 108d | 2011-06-13 A | 2011-11-23 | I06P122019C0 SS+10d, I06P123001C0 | 60% | 43.2d | 2011-06-13 | 2011-10-19 | 75d | 0d | PLUMBING [1670.4 h]; Cost [90220.7 AED] | 90,220.67 | 54,132.4 | I06P122005C0 | IC | C | 06 | P1 | ME | 220 | 05 | 1S | BILL 8 | B08 | S2 | 1F | R00 | ACF04 | MEP | 220 |  |  |  |  | M1F | 0 | 0 | 0 | 0 | 70 | 78473.57 | 45 | 60 | 45 |  | 60 |  |  |  |
| I06P109203C0 |  | IC-06 ; Partitions 1st face (PAT RM-1) | 60d | 2011-06-13 A | 2012-01-02 | I06P109201C0 | 30% | 42d | 2011-06-13 | 2011-08-23 | 48d | 22d | PARTITIONS [444 m]; PARTITIONS [3772 h]; Cost |  |  | I06P109203C0 | IC | C | 06 | P1 | PT | 092 | 03 |  | BILL 8 | B08 | S2 | 2F | R00 | ACF06 | GP | 092 | 314 | 945 |  |  | P1F |  |  |  |  |  | 34950.76 |  | 30 | 25 |  |  |  |  |  |
| I06P122011C0 |  | IC-06 ; 2nd Fix, Drainage/Water pipe (wall) (PAT RM-1) | 66d | 2011-06-13 A | 2012-01-08 | I06P109201C0 | 30% | 46.2d | 2011-06-13 | 2011-09-01 | 43.8d | 1.8d | PLUMBING [630 h]; Cost [34080.3 AED] | 34,080.3 | 10,224.09 | I06P122011C0 | IC | C | 06 | P1 | ME | 220 | 11 | 2n | BILL 8 | B08 | S2 | 2F | R00 | ACF07 | MEP | 220 |  |  |  |  |  |  |  |  |  | 20 | 11852.18 | 55 | 30 | 20 |  |  |  |  |  |
| I06P121117C0 |  | IC-06 ; 1st Fix, Inst of Sprinkler branch pipe (PAT RM-1) | 200d | 2011-06-19 A | 2011-12-25 | I06P109201C0, I06P121111C0, I06P105503C0 FF+18d | 90% | 20d | 2011-08-02 | 2012-04-01 | 54d | 28d | MECHANICAL [609.6 h]; Cost [33303.7 AED] | 33,303.68 | 29,973.31 | I06P121117C0 | IC | C | 06 | P1 | ME | 211 | 17 | 1S | BILL 8 | B08 | S2 | 1F | R00 | ACF04 | MEP | 211 |  |  |  |  | M1F |  |  |  |  | 40 | 34740.3 | 65 | 90 | 65 |  | 85 |  |  |  |
| I06P122027C0 |  | IC-06 ; Final Fix, Inst of All drain (PAT RM-1) | 24.75d | 2011-08-10 A | 2012-05-22 | I06P109305C0 | 47% | 13.2d | 2012-06-12 | 2012-07-11 | 168.93d | 142.8d | PLUMBING [630 h]; Cost [34080.3 AED] | 34,080.3 | 15,336.14 | I06P122027C0 | IC | C | 06 | P1 | ME | 220 | 27 | FF | BILL 8 | B08 | S2 | FF | R00 | ACF07 | MEP | 220 |  |  |  |  |  |  |  |  |  |  |  | 45 | 45 | 0 |  |  |  |  |  |
| I06P123008C0 |  | IC-06 ; 1st Fix, Inst of VCD's/FD's (PAT RM-1) | 48d | 2011-09-05 A | 2012-02-19 | I06P123023C0, I06P105503C0 FF+18d | 5% | 45.6d | 2011-10-09 | 2011-12-10 | 86.4d | 60.4d | MECHANICAL [910.8 h]; Cost [49161.7 AED] | 49,161.67 | 2,458.08 | I06P123008C0 | IC | C | 06 | P1 | ME | 230 | 08 | 1S | BILL 8 | B08 | S2 | 1F | R00 | ACF04 | MEP | 230 |  |  |  |  | M1F |  |  |  |  | 25 |  |  |  |  |  | 5 | zero |  |  |
| I06P122007C0 |  | IC-06 ; 1st Fix, Inst of Medical Gas pipe (PAT RM-1) | 48d | 2011-10-01 | 2011-11-29 | I06P121111C0 SS+14d, I06P123001C0 |  |  |  |  | 75d | 33d | PLUMBING [328.8 h]; Cost |  |  | I06P122007C0 | IC | C | 06 | P1 | ME | 220 | 07 | 1S | BILL 8 | B08 | S2 | 1F | R00 | ACF04 | MEP | 220 |  |  |  |  | M1F |  |  |  |  | 50 |  |  |  |  |  |  | zero |  |  |
| I06P127001C0 |  | IC-06 ; 1st Fix, Wiring/ Cabling work (PAT RM-1) | 48d | 2011-10-25 | 2011-12-26 | I06P126001C0, I06P126013C0, I06P127010C0 |  |  |  |  | 131.4d | 105.4d | ELECTRICAL [213.6 h]; Cost |  |  | I06P127001C0 | IC | C | 06 | P1 | ME | 270 | 01 | 1S | BILL 8 | B08 | S2 | 1F | R00 | ACF04 | MEP | 270 |  |  |  |  | M1F |  |  |  |  | 20 |  |  |  |  |  |  | zero |  |  |
| I06P122015C0 |  | IC-06 ; 2nd Fix, Medical Gas pipe (PAT RM-1) | 48d | 2011-11-12 | 2012-01-09 | I06P109201C0, I06P122007C0 SS |  |  |  |  | 42d | 0d | PLUMBING [328.8 h]; Cost |  |  | I06P122015C0 | IC | C | 06 | P1 | ME | 220 | 15 | 2n | BILL 8 | B08 | S2 | 2F | R00 | ACF07 | MEP | 220 |  |  |  |  |  |  |  |  |  |  |  |  |  |  |  |  |  |  |  |
| I06P126009C0 |  | IC-06 ; 2nd Fix, Inst of Wall conduites (PAT RM-1) | 48d | 2011-11-12 | 2012-01-09 | I06P109201C0 |  |  |  |  | 42d | 0d | ELECTRICAL [397.2 h]; Cost |  |  | I06P126009C0 | IC | C | 06 | P1 | ME | 260 | 09 | 2n | BILL 8 | B08 | S2 | 2F | R00 | ACF07 | MEP | 260 |  |  |  |  |  |  |  |  |  | 20 |  |  |  |  |  |  | zero |  |  |
| I06P105503C0 |  | IC-06 ; Ceiling Support for medical equipment (PAT RM-1) | 15d | 2011-11-15 | 2011-12-04 | I06P109201C0, IAFCI22001R20 FS+58d |  |  |  |  | 54d | 0d | SECONDARY STEEL [248 h]; STRUCTURAL STEEL [17 T(Fe)]; Cost |  |  | D03EY05503C0 | IC | C | 06 | P1 | SW | 055 | 03 |  | BILL 8 | B08 | S2 | 03 | R00 | ACF03 |  | b | 335 | 962 |  |  |  |  |  |  |  |  |  |  |  |  |  |  |  |  |  |
| I06P108103C0 |  | IC-06 ; Door Frames (PAT RM-1) | 36d | 2011-11-30 | 2012-01-12 | I06P109201C0, GNHE08101C0 FS+69d, I05M208101C0 SS+3d |  |  |  |  | 58.75d | 0d | ASSORTED DOORS [254 h]; Cost |  |  | I06P108103C0 | IC | C | 06 | P1 | DO | 081 | 03 |  | BILL 8 | B08 | S2 | DF | R00 | ACF06 |  | 081 | 316 | 947 | 08 |  |  |  |  |  |  |  |  |  |  |  |  |  |  |  |  |
| I06P123009C0 |  | IC-06 ; 2nd Fix, Inst of VAV'S CHW connection (PAT RM-1) | 48d | 2011-12-26 | 2012-02-21 | I06P123017C0 |  |  |  |  | 72d | 0d | MECHANICAL [901.2 h]; Cost |  |  | I06P123009C0 | IC | C | 06 | P1 | ME | 230 | 09 | 2n | BILL 8 | B08 | S2 | 2F | R00 | ACF07 | MEP | 230 |  |  |  |  |  |  |  |  |  | 20 |  |  |  |  |  |  | zero |  |  |
| I06P105511C0 |  | IC-06 ; Wall reinforcement for MEP/Medical (PAT RM-1) | 24d | 2011-12-31 | 2012-01-28 | I06P109201C0, IAFCI22001R02 FS+58d |  |  |  |  | 26d | 0d | SECONDARY STEEL [78 h]; Cost |  |  | I06P105511C0 | IC | C | 06 | P1 | SW | 055 | 11 |  | BILL 8 | B08 | S2 | 03 | R00 | ACF03 |  | b |  |  |  |  |  |  |  |  |  |  |  |  |  |  |  |  |  |  |  |
| I06P123015C0 |  | IC-06 ; 2nd Fix, Insulation of CHW pipe & Duct (PAT RM-1) | 54d | 2012-01-03 | 2012-03-06 | I06P123009C0 SS+6d, I06P123017C0, I06P123023C0 |  |  |  |  | 72d | 46d | MECHANICAL [3075.6 h]; Cost |  |  | I06P123015C0 | IC | C | 06 | P1 | ME | 230 | 15 | 2n | BILL 8 | B08 | S2 | 2F | R00 | ACF07 | MEP | 230 |  |  |  |  |  |  |  |  |  | 25 |  |  |  |  |  |  | zero |  |  |
| I06P101005C0 |  | IC-06 ; 2nd, Wall Inspection by Consultant (PAT RM-1) | 0d | 2012-01-10 | 2012-01-10 | I06P122011C0, I06P122015C0, I06P126009C0 |  |  |  |  | 42d | 16d | Cost |  |  | I06P101005C0 | IC | C | 06 | P1 | ME | 010 | 05 | 2n | BILL 8 | B08 | S2 | WI | R00 | ACF07 | MEP | 010 |  |  |  |  |  |  |  |  |  |  |  |  |  |  |  |  |  |  |  |
| I06P109205C0 |  | IC-06 ; Partitions Closing (PAT RM-1) | 48d | 2012-01-29 | 2012-03-25 | I06P101005C0, I06P105511C0, I06P109203C0, I06P122005C0, I06P122019C0, IAFOA09210C1 FF, I06P108103C0 FF, I06P123023C0 FF, I06P121117C0, IAFCI22001R20 FS+58d |  |  |  |  | 26d | 0d | PARTITIONS [444 m]; PARTITIONS [4828 h]; Cost |  |  | I06P109205C0 | IC | C | 06 | P1 | PT | 092 | 05 |  | BILL 8 | B08 | S2 | FF | R00 | ACF06 | GP | 092 | 315 | 946 |  |  | P2F |  |  |  |  |  |  |  |  |  | R3 |  |  |  |  |
| I06P107103C0 |  | IC-06 ; Waterproofing (PAT RM-1) | 12d | 2012-03-26 | 2012-04-08 | I06P108103C0, I06P109205C0 |  |  |  |  | 110.12d | 0d | THERMAL & MOISTURE [144 h]; THERMAL & MOISTURE [935 m2]; Cost |  |  | I06P107103C0 | IC | C | 06 | P1 | FF | 071 | 03 |  | BILL 8 | B08 | S2 | 01 | R00 | ACF03 |  | 071 | 105 | 999 |  |  |  |  |  |  |  |  |  |  |  |  |  |  |  |  |  |
| I06P109901C0 |  | IC-06 ; Wall Prime & 1st coat (PAT RM-1) | 30d | 2012-03-26 | 2012-04-29 | I06P109205C0 |  |  |  |  | 26d | 0d | WALL PAINT [899 h]; WALL PAINT [1122 m2]; Cost |  |  | I06P109901C0 | IC | C | 06 | P1 | PA | 099 | 01 |  | BILL 8 | B08 | S2 | 01 | R00 | ACF06 |  | 099 | 328 | 956 |  |  |  |  |  |  |  |  |  |  |  |  |  |  |  |  |  |
| I06P126005C0 |  | IC-06 ; 2nd Fix, Wiring for Power/Lighting/Emergency (PAT RM-1) | 48d | 2012-03-26 | 2012-05-20 | I06P109205C0 |  |  |  |  | 104.12d | 0d | ELECTRICAL [213.6 h]; Cost |  |  | I06P126005C0 | IC | C | 06 | P1 | ME | 260 | 05 | 2n | BILL 8 | B08 | S2 | 2F | R00 | ACF07 | MEP | 260 |  |  |  |  |  |  |  |  |  |  |  |  |  |  |  |  |  |  |  |
| I06P126007C0 |  | IC-06 ; 2nd Fix, Cable Pulling (PAT RM-1) | 48d | 2012-03-26 | 2012-05-20 | I06P109201C0 SS+6d, I06P109205C0 |  |  |  |  | 140.12d | 114d | ELECTRICAL [2858.4 h]; Cost |  |  | I06P126007C0 | IC | C | 06 | P1 | ME | 260 | 07 | 2n | BILL 8 | B08 | S2 | 2F | R00 | ACF07 | MEP | 260 |  |  |  |  |  |  |  |  |  | 25 |  |  |  |  |  |  | zero |  |  |
| I06P126011C0 |  | IC-06 ; 2nd Fix, Inst of Equipment (DB) (PAT RM-1) | 66d | 2012-03-26 | 2012-06-10 | I06P109205C0 |  |  |  |  | 42.25d | 0d | ELECTRICAL [1736.4 h]; Cost |  |  | I06P126011C0 | IC | C | 06 | P1 | ME | 260 | 11 | 2n | BILL 8 | B08 | S2 | 2F | R00 | ACF04 | MEP | 260 |  |  |  |  |  |  |  |  |  |  |  |  |  |  |  |  |  | E |  |
| I06P126053C0 |  | IC-06 ; 2nd Fix, Wiring / Cabling (PAT RM-1) | 48d | 2012-03-26 | 2012-05-20 | I06P109203C0, I06P109205C0 |  |  |  |  | 140.12d | 114d | ELECTRICAL [213.6 h]; Cost |  |  | I06P126053C0 | IC | C | 06 | P1 | ME | 260 | 53 | 2n | BILL 8 | B08 | S2 | 2F | R00 | ACF07 | MEP | 260 | 389 | 977 |  |  |  |  |  |  |  |  |  |  |  |  |  |  |  |  |  |
| I06P127020C0 |  | IC-06 ; 2nd Fix, Inst of ELV Equipment (Panels) (PAT RM-1) | 60d | 2012-03-26 | 2012-06-03 | I06P109205C0 |  |  |  |  | 92.12d | 48d | ELECTRICAL [1041.6 h]; Cost |  |  | I06P127020C0 | IC | C | 06 | P1 | ME | 270 | 20 | 2n | BILL 8 | B08 | S2 | 2F | R00 | ACF04 | MEP | 270 |  |  |  |  |  |  |  |  |  |  |  |  |  |  |  |  |  | E |  |
| I06P109305C0 |  | IC-06 ; Ceramic floor tile (PAT RM-1) | 24d | 2012-04-09 | 2012-05-06 | I06P107103C0 |  |  |  |  | 110.12d | 0d | CERAMIC FLOOR TILES [112 h]; CERAMIC FLOOR TILES [61 m2]; Cost |  |  | I06P109305C0 | IC | C | 06 | P1 | FF | 093 | 05 |  | BILL 8 | B08 | S2 | 02 | R00 | ACF06 |  | CT | 106 | 1000 |  |  |  |  |  |  |  |  |  |  |  |  |  |  |  |  |  |
| I06P105501C0 |  | IC-06 ; Handrails & balustrade (PAT RM-1) | 36d | 2012-04-30 | 2012-06-10 | I06P109901C0 |  |  |  |  | 26d | 0d | SECONDARY STEEL [346 h]; Cost |  |  | I06P105501C0 | IC | C | 06 | P1 | SW | 055 | 01 |  | BILL 8 | B08 | S2 | 01 | R00 | ACF03 |  | a |  |  |  |  |  |  |  |  |  |  |  |  |  |  |  |  |  |  |  |
| I06P109501C0 |  | IC-06 ; Ceiling Grid and Service Tile (PAT RM-1) | 36d | 2012-04-30 | 2012-06-10 | I06P105503C0, I06P109205C0, I06P121117C0, I06P123008C0, I06P123009C0, I06P123015C0, I06P127001C0, IAFCI22002R02 FS+58d, I06P109901C0 |  |  |  |  | 26d | 0d | CEILING GRID FOR GYPSUM [1982.09 h]; CEILING GRID FOR GYPSUM [169.45 m2]; Cost |  |  | I06P109501C0 | IC | C | 06 | P1 | CE | 095 | 01 |  | BILL 8 | B08 | S2 | 01 | R00 | ACF06 |  | 095 | 323 | 952 |  |  |  |  |  |  |  |  |  |  |  |  |  |  |  |  |  |
| I06P109510C0 |  | IC-06 ; Patient Lift Ceiling Rail (by others) (PAT RM-1) | 0d | 2012-04-30 | 2012-04-30 | I06P109501C0 SS |  |  |  |  | 158.12d | 132d | Cost |  |  | I06P109501C0 | IC | C | 06 | P1 | CE | 095 | 10 |  | BILL 8 | B08 | S2 | 02 | R00 | ACF06 |  | 095 | 323 | 952 |  |  |  |  |  |  |  |  |  |  |  |  |  |  |  |  |  |
| I06P122025C0 |  | IC-06 ; Final Fix, Inst of Sanitary Ware (PAT RM-1) | 36d | 2012-05-07 | 2012-06-18 | I06P109205C0, I06P109305C0, A10230 FS+148d |  |  |  |  | 110.12d | 0d | PLUMBING [1518 h]; Cost |  |  | I06P122025C0 | IC | C | 06 | P1 | ME | 220 | 25 | FF | BILL 8 | B08 | S2 | FF | R00 | ACF07 | MEP | 220 |  |  |  |  |  |  |  |  |  |  |  |  |  |  |  |  |  |  |  |
| I06P126015C0 |  | IC-06 ; Final Fix, Termination & Gladding of Cables (PAT RM-1) | 36d | 2012-05-21 | 2012-07-02 | I06P126005C0 |  |  |  |  | 104.12d | 72.5d | ELECTRICAL [158.4 h]; Cost |  |  | I06P126015C0 | IC | C | 06 | P1 | ME | 260 | 15 | FF | BILL 8 | B08 | S2 | FF | R00 | ACF07 | MEP | 260 |  |  |  |  |  |  |  |  |  |  |  |  |  |  |  |  |  |  |  |
| I06P109202C0 |  | IC-06 ; Rolling Shade (PAT RM-1) | 29.88d | 2012-06-11 | 2012-07-16 | I06P109501C0 |  |  |  |  | 134.25d | 108.12d | PARTITIONS [841 h]; Cost |  |  | I06P109201C0 | IC | C | 06 | P1 | FI | 092 | 02 |  | BILL 8 | B08 | S2 | 02 | R00 | ACF06 | GP | 092 | 313 | 944 |  |  |  |  |  |  |  |  |  |  |  |  |  |  |  |  |  |
| I06P109601C0 |  | IC-06 ; Flooring (Rubber,Terrazzo) (PAT RM-1) | 42d | 2012-06-11 | 2012-07-30 | I06P109501C0, I06P105501C0 |  |  |  |  | 26d | 0d | TERRAZO FLOOR [712 h]; TERRAZO FLOOR [392 m2]; RUBBER FLOOR [198 m2]; RUBBER FLOOR [80 h]; Cost |  |  | I06P109601C0 | IC | C | 06 | P1 | FF | 096 | 01 |  | BILL 8 | B08 | S2 | 01 | R00 | ACF06 |  | RF | 326 | 955 |  |  |  |  |  |  |  |  |  |  |  |  |  |  |  |  |  |
| I06P109903C0 |  | IC-06 ; Wall Final Paint (PAT RM-1) | 30d | 2012-06-11 | 2012-07-16 | I06P109901C0, I06P109905C0, I06P109501C0 |  |  |  |  | 134.12d | 78d | WALL PAINT [484 h]; WALL PAINT [604 m2]; Cost |  |  | I06P109903C0 | IC | C | 06 | P1 | PA | 099 | 03 |  | BILL 8 | B08 | S2 | 02 | R00 | ACF06 |  | 099 | 329 | 957 |  |  |  |  |  |  |  |  |  |  |  |  |  |  |  |  |  |
| I06P109905C0 |  | IC-06 ; Ceiling Prime & 1st coat (PAT RM-1) | 0d | 2012-06-11 | 2012-06-11 | I06P109501C0 |  |  |  |  | 134.12d | 0d | Cost |  |  | I06P109905C0 | IC | C | 06 | P1 | PA | 099 | 05 |  | BILL 8 | B08 | S2 | 01 | R00 | ACF06 |  | 099 | 330 | 958 |  |  |  |  |  |  |  |  |  |  |  |  |  |  |  |  |  |
| I06P121115C0 |  | IC-06 ; 2nd Fix, Inst of Sprinkler droppers (PAT RM-1) | 48d | 2012-06-11 | 2012-08-06 | I06P109501C0 |  |  |  |  | 38.12d | 0d | MECHANICAL [800.4 h]; Cost |  |  | I06P121115C0 | IC | C | 06 | P1 | ME | 211 | 15 | 2n | BILL 8 | B08 | S2 | 2F | R00 | ACF07 | MEP | 211 |  |  |  |  |  |  |  |  |  |  |  |  |  |  |  |  |  |  |  |
| I06P123021C0 |  | IC-06 ; 2nd Fix, Inst of Flexible Duct & Plenum boxes (PAT RM-1) | 48d | 2012-06-11 | 2012-08-06 | I06P109205C0, I06P109501C0 |  |  |  |  | 68.12d | 0d | MECHANICAL [72 h]; Cost |  |  | I06P123021C0 | IC | C | 06 | P1 | ME | 230 | 21 | 2n | BILL 8 | B08 | S2 | 2F | R00 | ACF07 | MEP | 230 |  |  |  |  |  |  |  |  |  |  |  |  |  |  |  |  |  |  |  |
| I06P126017C0 |  | IC-06 ; Final Fix, Inst of Ceiling rose (PAT RM-1) | 36d | 2012-06-11 | 2012-07-23 | I06P109501C0 |  |  |  |  | 62.12d | 0d | ELECTRICAL [33.6 h]; Cost |  |  | I06P126017C0 | IC | C | 06 | P1 | ME | 260 | 17 | FF | BILL 8 | B08 | S2 | FF | R00 | ACF07 | MEP | 260 |  |  |  |  |  |  |  |  |  |  |  |  |  |  |  |  |  |  |  |
| I06P127002C0 |  | IC-06 ; 2nd Fix, Wiring Droppers (PAT RM-1) | 48d | 2012-06-11 | 2012-08-06 | I06P109501C0 |  |  |  |  | 68.12d | 0d | ELECTRICAL [213.6 h]; Cost |  |  | I06P127002C0 | IC | C | 06 | P1 | ME | 270 | 02 | 2n | BILL 8 | B08 | S2 | 2F | R00 | ACF07 | MEP | 270 |  |  |  |  |  |  |  |  |  |  |  |  |  |  |  |  |  |  |  |
| I06P122021C0 |  | IC-06 ; Final Fix, Terminate Sanitary Ware & Appliances (PAT RM-1) | 36d | 2012-06-19 | 2012-07-30 | I06P122011C0, I06P122025C0 |  |  |  |  | 110.12d | 84d | PLUMBING [1315.2 h]; Cost |  |  | I06P122021C0 | IC | C | 06 | P1 | ME | 220 | 21 | FF | BILL 8 | B08 | S2 | FF | R00 | ACF07 | MEP | 220 |  |  |  |  |  |  |  |  |  |  |  |  |  |  |  |  |  |  |  |
| I06P126003C0 |  | IC-06 ; Final Fix, Inst of Light fittings (PAT RM-1) | 54d | 2012-06-19 | 2012-08-22 | I06P109501C0, I06P126017C0 SS+6d |  |  |  |  | 62.12d | 30.5d | ELECTRICAL [9577.2 h]; Cost |  |  | I06P126003C0 | IC | C | 06 | P1 | ME | 260 | 03 | FF | BILL 8 | B08 | S2 | FF | R00 | ACF07 | MEP | 260 |  |  |  |  |  |  |  |  |  |  |  |  |  |  |  |  |  |  |  |
| I06P127030C0 |  | IC-06 ; Final Fix, Inst of ELV device (Detector/Speaker) (PAT RM-1) | 48d | 2012-06-19 | 2012-08-13 | I06P109501C0, I06P127002C0 SS+6d |  |  |  |  | 68.12d | 36.5d | ELECTRICAL [1707.6 h]; Cost |  |  | I06P127030C0 | IC | C | 06 | P1 | ME | 270 | 30 | FF | BILL 8 | B08 | S2 | FF | R00 | ACF07 | MEP | 270 |  |  |  |  |  |  |  |  |  |  |  |  |  |  |  |  |  |  |  |
| I06P108107C0 |  | IC-06 ; Doors (PAT RM-1) | 36d | 2012-07-10 | 2012-08-22 | I06P108103C0, I06P109501C0, I06P109601C0 SS+24d, I06P109901C0 |  |  |  |  | 80.12d | 0d | ASSORTED DOORS [800 h]; ASSORTED DOORS [80 no]; Cost |  |  | I06P108107C0 | IC | C | 06 | P1 | DO | 081 | 07 |  | BILL 8 | B08 | S2 | DR | R00 | ACF06 |  | 081 | 317 | 948 | 08 |  |  |  |  |  |  |  |  |  |  |  |  |  |  |  |  |
| I06P106101C0 |  | IC-06 ; Wood / caseworks (PAT RM-1) | 54d | 2012-07-31 | 2012-10-03 | I06CO04409C0, I06P109501C0, I06P109601C0, I06P109901C0, IAFWA00103M0, IAFCI22002R02 FS+178d |  |  |  |  | 26.12d | 0d | WOOD WORK/CASEWORK [289.02 no]; WOOD WORK/CASEWORK [2319 h]; Cost |  |  | I06P106101C0 | IC | C | 06 | P1 | WO | 061 | 01 |  | BILL 8 | B08 | S2 | WW | R00 | ACF06 |  | 061 | 332 | 960 |  |  |  |  |  |  |  |  |  |  |  |  |  |  |  |  | R3 |

| ID | WBS | Activity | Duration | Start | Finish | Predecessors | Complete | Remaining | Planned start | Planned finish | Total float | Free float | Resources | Cost | Actual cost | Change Order # | NEW ACTIVITY ID | change id | CCAD BUILDING(SET) | CCAD PHASE(SET) | CCAD FLOOR(SET) | CCAD ZONE(SET) | CCAD WORK(SET) | CCAD SECTION(SET) | CCAD SERIAL No.(SET) | CCAD CBS(SET) | CCAD BILL(SET) | CCAD HANDOVER(SET) | CCAD TAG(SET) | CCAD REV(SET) | CCADACF (SET) | CCAD SSCF | R3 Finish | CCAD SUB ZONE MEP(SET) | CCAD CSA | CCAD DIVISION(SET) | RENZ % COMPLETE | Claimed This Month | Act Selector % | R3 Partitions | user_number8 | user_integer1 | user_integer2 | user_number7 | July2011 Target% Complete | N_% | U% | P_811 | P_711 | FILTER | CCAD MEQ |
| --- | --- | --- | --- | --- | --- | --- | --- | --- | --- | --- | --- | --- | --- | --- | --- | --- | --- | --- | --- | --- | --- | --- | --- | --- | --- | --- | --- | --- | --- | --- | --- | --- | --- | --- | --- | --- | --- | --- | --- | --- | --- | --- | --- | --- | --- | --- | --- | --- | --- | --- | --- |
| I06P106102C0 |  | IC-06 ; Head/Foot Wall (PAT RM-1) | 30.5d | 2012-07-31 | 2012-09-06 | I06P109501C0, OGNMU00031S0, IAFWA00103M0, IAFCI22002R02 FS+178d, I06P106101C0 SS |  |  |  |  | 31.62d | 0d | WOOD WORK/CASEWORK [1483 h]; Cost |  |  | 332 | 960 | I06P106102C0 | IC | C | 06 | P1 | WO | 061 | 02 | BILL 8 | B08 | S2 | WW | R00 | ACF06 | 061 | R3 |  |  |  |  |  |  |  |  |  |  |  |  |  |  |  |  |  |  |
| I06P109701C0 |  | IC-06 ; Wall finishes (ST, WD, WC) (PAT RM-1) | 36d | 2012-07-31 | 2012-09-12 | I06P126011C0, I06P127020C0, IAFCI22002R02 FS+158d, I06P109601C0 |  |  |  |  | 44.12d | 0d | ASSORTED WALL FINISH [477 h]; ASSORTED WALL FINISH [548 m2]; Cost |  |  | 105 | 1002 | I06P109701C0 | IC | C | 06 | P1 | WF | 097 | 01 | BILL 8 | B08 | S2 | 01 | R00 | ACF06 | 097 | R3 |  |  |  |  |  |  |  |  |  |  |  |  |  |  |  |  |  |  |
| I06P121113C0 |  | IC-06 ; Final Fix, Inst of Sprinklers head/ Extinguisher (PAT RM-1) | 36d | 2012-08-07 | 2012-09-19 | I06P109501C0, I06P121115C0 |  |  |  |  | 38.12d | 6.5d | MECHANICAL [152.4 h]; Cost |  |  |  |  | I06P121113C0 | IC | C | 06 | P1 | ME | 211 | 13 | BILL 8 | B08 | S2 | FF | R00 | ACF07 | 211 |  | FF | MEP |  |  |  |  |  |  |  |  |  |  |  |  |  |  |  |  |
| I06P123019C0 |  | IC-06 ; Final Fix, Inst of Grilles & Diffusers (PAT RM-1) | 36d | 2012-08-07 | 2012-09-19 | I06P109501C0, I06P123021C0, IZ9GZ23061R2 FF |  |  |  |  | 68.12d | 42d | MECHANICAL [757.2 h]; Cost |  |  |  |  | I06P123019C0 | IC | C | 06 | P1 | ME | 230 | 19 | BILL 8 | B08 | S2 | FF | R00 | ACF07 | 230 |  | FF | MEP |  |  |  |  |  |  |  |  |  |  |  |  |  |  |  |  |
| I06P108709C0 |  | IC-06 ; Ironmongery (PAT RM-1) | 24d | 2012-08-23 | 2012-09-19 | I06P108107C0 |  |  |  |  | 80.12d | 54d | IRONMONGERY [370 h]; IRONMONGERY [37 no]; Cost |  |  | 322 | 951 | I06P108709C0 | IC | C | 06 | P1 | DO | 087 | 09 | BILL 8 | B08 | S2 | IM | R00 | ACF06 | 087 |  |  |  | 08 |  |  |  |  |  |  |  |  |  |  |  |  |  |  |  |
| I06P122029C0 |  | IC-06 ; Final Fix, Medical Gas pipe (PAT RM-1) | 18d | 2012-09-06 | 2012-09-27 | I06P109501C0, I06P106102C0 |  |  |  |  | 31.62d | 0d | PLUMBING [328.8 h]; Cost |  |  |  |  | I06P122029C0 | IC | C | 06 | P1 | ME | 220 | 29 | BILL 8 | B08 | S2 | FF | R00 | ACF07 | 220 |  | FF | MEP |  |  |  |  |  |  |  |  |  |  |  |  |  |  |  |  |
| I06P111001C0 |  | IC-06 ; Wall Protection (WP, CG, WG, FCG) (PAT RM-1) | 24d | 2012-09-13 | 2012-10-10 | I06P109701C0, I06P109903C0 SS |  |  |  |  | 62.12d | 36d | FF&E [58 h]; Cost |  |  | 326 | 1001 | I06P111001C0 | IC | C | 06 | P1 | WF | 110 | 01 | BILL 8 | B08 | S2 | 03 | R00 | ACF08 | b |  |  |  |  |  |  |  |  |  |  |  |  |  |  |  |  |  |  |  |
| I06P101006C0 |  | IC-06 ; 2nd, Ceiling Inspection by Consultants (PAT RM-1) | 0d | 2012-09-27 | 2012-09-27 | I06P121115C0, I06P123009C0, I06P123015C0, I06P127002C0, I06P109501C0, I06P121113C0, I06P122029C0, I06P126003C0, I06P126017C0, I06P127030C0, I06P126015C0 |  |  |  |  | 31.62d | 5.5d | Cost |  |  |  |  | I06P101006C0 | IC | C | 06 | P1 | ME | 010 | 06 | BILL 8 | B08 | S2 | CI | R00 | ACF07 | 010 |  | 2n | MEP |  |  |  |  |  |  |  |  |  |  |  |  |  |  |  |  |
| I06P109503C0 |  | IC-06 ; Ceiling closure - ACT/Gypsum (PAT RM-1) | 18d | 2012-10-04 | 2012-10-24 | I06P101006C0, I06P109510C0, I06P121115C0, I06P126005C0, I06P127001C0, I06P127002C0, IAFOA09509C1 FF, I06P106101C0, I06P109701C0, I06P123021C0, I06P126053C0, I06P126007C0 |  |  |  |  | 26.12d | 0d | ASSORTED CEILING FINISH [407.13 h]; CEILING GYPSUM [55.55 h]; ASSORTED CEILING FINISH [662 m2]; CEILING GYPSUM [169 m2]; Cost |  |  | 324 | 953 | I06P109503C0 | IC | C | 06 | P1 | CE | 095 | 03 | BILL 8 | B08 | S2 | 02 | R00 | ACF06 | 095 |  |  |  |  |  |  |  |  |  |  |  |  |  |  |  |  |  |  |  |
| I06P109671C1 |  | IC-06, Carpet Tile Finish (Patient Room-1) | 0d | 2012-10-25 | 2012-10-25 | I06P109903C0 SS, I06P109907C0 SS |  |  |  |  | 50d | 21.25d | Cost |  |  |  |  |  | IC | C | 06 | P1 | FF | 096 |  |  | B08 |  |  | R00 | ACF06 | CPT |  |  | CPT |  |  |  |  |  |  |  |  |  |  |  |  |  |  |  |  |
| I06P109907C0 |  | IC-06 ; Ceiling Final paint (PAT RM-1) | 0d | 2012-10-25 | 2012-10-25 | I06P109601C0 SS+24d, I06P109905C0, I06P109503C0 |  |  |  |  | 50d | 0d | Cost |  |  | 331 | 959 | I06P109907C0 | IC | C | 06 | P1 | PA | 099 | 07 | BILL 8 | B08 | S2 | 02 | R00 | ACF06 | 099 |  |  |  |  |  |  |  |  |  |  |  |  |  |  |  |  |  |  |  |
| I06P111003C0 |  | IC-06 ; FF & E (PAT RM-1) | 12d | 2012-10-25 | 2012-11-10 | I06P109601C0 SS+24d, I06P106101C0, I06P109503C0 |  |  |  |  | 38.12d | 12d | FF&E [601 h]; FF&E [320.39 no]; Cost |  |  | 333 | 961 | I06P111003C0 | IC | C | 06 | P1 | WO | 110 | 03 | BILL 8 | B08 | S2 | 04 | R00 | ACF08 | a |  |  |  |  |  |  |  |  |  |  |  |  |  |  |  |  |  |  |  |
| I06P126019C0 |  | IC-06 ; Final Fix, Inst of Switch/Sockets (PAT RM-1) | 12d | 2012-10-25 | 2012-11-10 | I06P109901C0, I06P109503C0 |  |  |  |  | 26.12d | 0d | ELECTRICAL [164.4 h]; Cost |  |  |  |  | I06P126019C0 | IC | C | 06 | P1 | ME | 260 | 19 | BILL 8 | B08 | S2 | FF | R00 | ACF07 | 260 |  | FF | MEP |  |  |  |  |  |  |  |  |  |  |  |  |  |  |  |  |
|  | 10 | **Precommissioning Tesing & snagging (PAT RM-1)** |  | 2012-11-11 | 2012-12-17 |  |  |  |  |  |  |  |  |  |  |  |  |  |  |  |  |  |  |  |  |  |  |  |  |  |  |  |  |  |  |  |  |  |  |  |  |  |  |  |  |  |  |  |  |  |  |
| I06TS01804C0 |  | IC-06 ; MEP de-snag, FIREM sign-off | 12d | 2012-11-11 | 2012-11-25 | I06P122025C0, I06P122027C0, I06P126015C0, I06P122021C0, I06P121113C0, I06P123019C0, I06P122029C0, I06P126017C0, I06P126003C0, I06P127030C0, I06P126019C0 |  |  |  |  | 26.12d | 0d | TESTING & COMMISSIONING [510 h]; Cost |  |  |  |  | I06TS01801C0 | IC | C | 06 | TS | SC | 018 | 01 | BILL 8 | B08 | S2 | 01 | R00 | ACF07 | 018 |  |  |  |  |  |  |  |  |  |  |  |  |  |  |  |  |  |  |  |
| I06TS01808C0 |  | IC-06 ; Touch-up & Clean / JV inspection /CIR /De-snag | 17.88d | 2012-11-26 | 2012-12-17 | I06CO04402C0, I06CO04403C0, I06CO04409C0, I06CO04411C0, I06P105501C0, I06P105511C0, I06P106101C0, I06P106102C0, I06P107103C0, I06P108103C0, I06P108107C0, I06P108709C0, I06P109201C0, I06P109202C0, I06P109203C0, I06P109205C0, I06P109305C0, I06P109501C0, I06P109503C0, I06P109510C0, I06P109601C0, I06P109701C0, I06P109901C0, I06P109903C0, I06P109905C0, I06P109907C0, I06P111001C0, I06P111003C0, I06P121113C0, I06P122021C0, I06P122025C0, I06P122027C0, I06P122029C0, I06P123019C0, I06P126003C0, I06P126015C0, I06P126017C0, I06P126019C0, I06P127030C0, I06TS01804C0 |  |  |  |  | 26.12d | 0d | TESTING & COMMISSIONING [128 h]; Cost |  |  |  |  | I06TS01802C0 | IC | C | 06 | TS | SC | 018 | 02 | BILL 8 | B08 | S2 | 02 | R00 | ACF07 | 018 |  |  |  |  |  |  |  |  |  |  |  |  |  |  |  |  |  |  |  |
| I06TS01812C0 |  | IC-06 ; Consultant's final de-snag inspection | 0d | 2012-12-17 | 2012-12-17 | I06TS01808C0 |  |  |  |  | 26.12d | 5.12d | Cost |  |  |  |  | I06TS01803C0 | IC | C | 06 | TS | SC | 018 | 03 | BILL 8 | B08 | S2 | 03 | R00 | ACF07 | 018 |  |  |  |  |  |  |  |  |  |  |  |  |  |  |  |  |  |  |  |
|  | 04 | **PAT RM-2** |  | 2011-05-15 | 2012-12-18 |  |  |  |  |  |  |  |  |  |  |  |  |  |  |  |  |  |  |  |  |  |  |  |  |  |  |  |  |  |  |  |  |  |  |  |  |  |  |  |  |  |  |  |  |  |  |
| I06P209201C0 |  | IC-06 ; Metal Studs (PAT RM-2) | 75d | 2011-05-15 A | 2011-11-10 | I06P223001C0 SS, I06PA09201C0 FF, IAFCI09201R02 FS+58d, I06CO04409C0 FF, I06CO04411C0 FF | 80% | 15d | 2011-07-21 | 2011-10-18 | 36d | 0d | PARTITIONS [3089 h]; PARTITIONS - Metal Studs [284 m]; Cost |  |  | 313 | 944 | I06P209201C0 | IC | C | 06 | P2 | PT | 092 | 01 | BILL 8 | B08 | S2 | 1F | R00 | ACF06 | 092 |  |  | GP |  | 30 | 71813.38 | PMS | R3 |  |  |  |  |  |  |  |  |  |  |  |
| I06P222019C0 |  | IC-06 ; 1st Fix, Inst of Drainage pipe (ceiling) (PAT RM-2) | 120d | 2011-05-15 A | 2011-10-20 | I06P223001C0, I06P226013C0 SS+14d | 85% | 18d | 2011-08-28 | 2012-01-24 | 75d | 0d | PLUMBING [630 h]; Cost [34080.3 AED] | 34,080.3 | 28,968.26 |  |  | I06P222019C0 | IC | C | 06 | P2 | ME | 220 | 19 | BILL 8 | B08 | S2 | 1F | R00 | ACF04 | 220 |  | 1S | MEP |  | 40 | 13827.54 | M1F |  | 0 | 0 | 0 | 0 | 95 | 100 | 85 |  |  |  |  |
| I06P222005C0 |  | IC-06 ; 1st Fix, Inst of Water supply pipe (ceiling) (PAT RM-2) | 108d | 2011-05-16 A | 2011-11-16 | I06P222019C0 SS+10d, I06P223001C0 | 65% | 37.8d | 2011-09-11 | 2012-01-22 | 75d | 0d | PLUMBING [1670.4 h]; Cost [90220.7 AED] | 90,220.67 | 58,643.43 |  |  | I06P222005C0 | IC | C | 06 | P2 | ME | 220 | 05 | BILL 8 | B08 | S2 | 1F | R00 | ACF04 | 220 |  | 1S | MEP |  | 10 | 20926.29 | M1F |  | 0 | 0 | 0 | 0 | 70 | 65 | 65 |  |  |  |  |
| I06P223001C0 |  | IC-06 ; 1st Fix, Inst. of Supports for MEP (PAT RM-2) | 23d | 2011-05-17 A | 2011-05-29 A | I06S207807C0 | 100% |  | 2011-06-13 | 2011-07-11 |  |  | MECHANICAL [577.2 h]; Cost [32540.2 AED] | 32,540.18 | 32,540.18 |  |  | I06P223001C0 | IC | C | 06 | P2 | ME | 230 | 01 | BILL 8 | B08 | S2 | 1F | R00 | ACF04 | 230 |  | 1S | MEP |  | 100 |  | M1F |  |  |  |  |  |  |  |  |  |  |  |  |
| I06P226001C0 |  | IC-06 ; 1st Fix, Inst of Trunking/Conduiting (PAT RM-2) | 200d | 2011-05-19 A | 2011-10-23 | I06P223001C0, I06S207807C0 | 90% | 20d | 2011-07-12 | 2012-03-12 | 75d | 0d | ELECTRICAL [397.2 h]; Cost [20466.7 AED] | 20,466.68 | 18,420.01 |  |  | I06P226001C0 | IC | C | 06 | P2 | ME | 260 | 01 | BILL 8 | B08 | S2 | 1F | R00 | ACF04 | 260 |  | 1S | MEP |  | 10 | 15441.89 | M1F |  |  |  |  |  | 50 | 75 |  | 90 | 60 |  |  |
| I06P221111C0 |  | IC-06 ; 1st Fix, Inst of Sprinkler main pipe (PAT RM-2) | 200d | 2011-05-23 A | 2011-10-23 | I06P222005C0 SS+14d, I06P223001C0 | 90% | 20d | 2011-09-27 | 2012-05-26 | 75d | 0d | MECHANICAL [264 h]; Cost [14398.4 AED] | 14,398.38 | 12,958.54 |  |  | I06P221111C0 | IC | C | 06 | P2 | ME | 211 | 11 | BILL 8 | B08 | S2 | 1F | R00 | ACF04 | 211 |  | 1S | MEP |  | 30 | 10027.77 | M1F |  |  |  |  |  | 90 | 65 | 90 | 90 | 65 |  |  |
| I06P226013C0 |  | IC-06 ; 1st Fix, Inst of Cable Tray (PAT RM-2) | 108d | 2011-05-23 A | 2011-10-12 | I06P223001C0, I06P227010C0 SS+12d, I06S207807C0 | 90% | 10.8d | 2011-08-11 | 2011-12-24 | 75d | 0d | ELECTRICAL [205.2 h]; Cost [11036 AED] | 11,035.96 | 9,932.36 |  |  | I06P226013C0 | IC | C | 06 | P2 | ME | 260 | 13 | BILL 8 | B08 | S2 | 1F | R00 | ACF04 | 260 |  | 1S | MEP |  | 10 | 8326.51 | M1F |  | 0 | 0 | 0 | 0 | 85 | 100 |  | 65 | 60 |  |  |
| I06P227010C0 |  | IC-06 ; 1st Fix, Inst of Trunking for ELV system (PAT RM-2) | 108d | 2011-05-23 A | 2011-10-25 | I06P223001C0, I06P226001C0 SS+14d, I06S207807C0 | 80% | 21.6d | 2011-07-28 | 2011-12-10 | 75d | 0d | ELECTRICAL [914.4 h]; Cost [47960 AED] | 47,960.04 | 38,368.03 |  |  | I06P227010C0 | IC | C | 06 | P2 | ME | 270 | 10 | BILL 8 | B08 | S2 | 1F | R00 | ACF04 | 270 |  | 1S | MEP |  | 20 | 30605.75 | M1F |  | 0 | 0 | 0 | 0 | 70 | 65 |  |  |  |  |  |
| I06P223023C0 |  | IC-06 ; 1st Fix, Inst of Main Ducting (PAT RM-2) | 108d | 2011-05-25 A | 2011-12-25 | I06P223001C0, I06P223017C0 SS+10d | 75% | 27d | 2011-10-25 | 2012-03-07 | 54d | 0d | MECHANICAL [7574.4 h]; Cost [413624 AED] | 413,624.26 | 310,218.2 |  |  | I06P223023C0 | IC | C | 06 | P2 | ME | 230 | 23 | BILL 8 | B08 | S2 | 1F | R00 | ACF04 | 230 |  | 1S | MEP |  | 10 | 191918.52 | M1F |  | 0 | 0 | 0 | 0 | 50 | 70 | 75 |  |  |  |  |
| I06P209203C0 |  | IC-06 ; Partitions 1st face (PAT RM-2) | 75d | 2011-06-13 A | 2011-12-27 | I06P209201C0 | 50% | 37.5d | 2011-06-13 | 2011-09-12 | 52.5d | 26.5d | PARTITIONS [284 m]; PARTITIONS [2402 h]; Cost |  |  | 314 | 945 | I06P209203C0 | IC | C | 06 | P2 | PT | 092 | 03 | BILL 8 | B08 | S2 | 2F | R00 | ACF06 | 092 |  |  | GP |  |  | 22341.94 | P1F |  |  |  |  |  |  |  |  | 50 | 25 |  |  |
| I06P222011C0 |  | IC-06 ; 2nd Fix, Drainage/Water pipe (wall) (PAT RM-2) | 120d | 2011-06-13 A | 2012-01-16 | I06P209201C0 | 55% | 54d | 2011-06-13 | 2011-11-03 | 36d | 0d | PLUMBING [630 h]; Cost [34080.3 AED] | 34,080.3 | 18,744.17 |  |  | I06P222011C0 | IC | C | 06 | P2 | ME | 220 | 11 | BILL 8 | B08 | S2 | 2F | R00 | ACF07 | 220 |  | 2n | MEP |  |  | 11852.18 |  |  |  |  |  |  | 25 | 55 |  |  |  |  |  |
| I06P221117C0 |  | IC-06 ; 1st Fix, Inst of Sprinkler branch pipe (PAT RM-2) | 200d | 2011-06-28 A | 2011-12-25 | I06P209201C0, I06P221111C0, I06P205503C0 FF+18d | 90% | 20d | 2011-07-24 | 2012-03-22 | 102d | 76d | MECHANICAL [609.6 h]; Cost [33303.7 AED] | 33,303.68 | 29,973.31 |  |  | I06P221117C0 | IC | C | 06 | P2 | ME | 211 | 17 | BILL 8 | B08 | S2 | 1F | R00 | ACF04 | 211 |  | 1S | MEP |  |  | 11580.1 | M1F |  |  |  |  |  | 85 | 45 | 90 | 90 | 45 |  |  |
| I06P223017C0 |  | IC-06 ; 1st Fix, Inst of CHW pipe (PAT RM-2) | 108d | 2011-06-29 A | 2011-12-25 | I06P221111C0 SS+14d, I06P223001C0, I06P205503C0 FF+18d | 75% | 27d | 2011-06-29 | 2011-11-05 | 48d | 0d | MECHANICAL [2832 h]; Cost [154640 AED] | 154,640.47 | 115,980.35 |  |  | I06P223017C0 | IC | C | 06 | P2 | ME | 230 | 17 | BILL 8 | B08 | S2 | 1F | R00 | ACF04 | 230 |  | 1S | MEP |  |  | 62783.05 | M1F |  | 0 | 0 | 0 | 0 | 45 | 55 | 75 | 70 | 55 |  |  |
| I06P223008C0 |  | IC-06 ; 1st Fix, Inst of VCD's/FD's (PAT RM-2) | 72d | 2011-07-10 A | 2012-02-28 | I06P223023C0, I06P205503C0 FF+18d | 25% | 54d | 2011-08-17 | 2011-11-15 | 78d | 52d | MECHANICAL [910.8 h]; Cost [49161.7 AED] | 49,161.67 | 12,290.42 |  |  | I06P223008C0 | IC | C | 06 | P2 | ME | 230 | 08 | BILL 8 | B08 | S2 | 1F | R00 | ACF04 | 230 |  | 1S | MEP |  |  |  | M1F |  | 0 | 0 | 0 | 0 | 25 | 20 | 25 |  |  |  |  |
| I06P222027C0 |  | IC-06 ; Final Fix, Inst of All drain (PAT RM-2) | 18d | 2011-08-10 A | 2012-05-20 | I06P209305C0 | 38% | 11.14d | 2012-07-14 | 2012-08-04 | 170.86d | 144.86d | PLUMBING [630 h]; Cost [34080.3 AED] | 34,080.3 | 15,336.14 |  |  | I06P222027C0 | IC | C | 06 | P2 | ME | 220 | 27 | BILL 8 | B08 | S2 | FF | R00 | ACF07 | 220 |  | FF | MEP |  |  |  |  |  |  |  |  |  |  | 45 |  | 45 | 0 |  |  |
| I06P222007C0 |  | IC-06 ; 1st Fix, Inst of Medical Gas pipe (PAT RM-2) | 48d | 2011-10-01 | 2011-11-29 | I06P221111C0 SS+14d, I06P223001C0 |  |  |  |  | 75d | 33d | PLUMBING [328.8 h]; Cost |  |  |  |  | I06P222007C0 | IC | C | 06 | P2 | ME | 220 | 07 | BILL 8 | B08 | S2 | 1F | R00 | ACF04 | 220 |  | 1S | MEP |  |  |  | M1F |  |  |  |  |  | 50 |  |  |  |  | zero |  |
| I06P227001C0 |  | IC-06 ; 1st Fix, Wiring/ Cabling work (PAT RM-2) | 48d | 2011-10-25 | 2011-12-26 | I06P226001C0, I06P226013C0, I06P227010C0 |  |  |  |  | 131.4d | 105.4d | ELECTRICAL [213.6 h]; Cost |  |  |  |  | I06P227001C0 | IC | C | 06 | P2 | ME | 270 | 01 | BILL 8 | B08 | S2 | 1F | R00 | ACF04 | 270 |  | 1S | MEP |  |  |  | M1F |  |  |  |  |  | 50 |  |  |  |  | zero |  |
| I06P222015C0 |  | IC-06 ; 2nd Fix, Medical Gas pipe (PAT RM-2) | 48d | 2011-11-12 | 2012-01-09 | I06P209201C0, I06P222007C0 SS |  |  |  |  | 42d | 6d | PLUMBING [328.8 h]; Cost |  |  |  |  | I06P222015C0 | IC | C | 06 | P2 | ME | 220 | 15 | BILL 8 | B08 | S2 | 2F | R00 | ACF07 | 220 |  | 2n | MEP |  |  |  |  |  |  |  |  |  |  |  |  |  |  |  |  |
| I06P226009C0 |  | IC-06 ; 2nd Fix, Inst of Wall conduites (PAT RM-2) | 48d | 2011-11-12 | 2012-01-09 | I06P209201C0 |  |  |  |  | 42d | 6d | ELECTRICAL [397.2 h]; Cost |  |  |  |  | I06P226009C0 | IC | C | 06 | P2 | ME | 260 | 09 | BILL 8 | B08 | S2 | 2F | R00 | ACF07 | 260 |  | 2n | MEP |  |  |  |  |  |  |  |  |  | 25 |  |  |  |  | zero |  |
| I06P205503C0 |  | IC-06 ; Ceiling Support for medical equipment (PAT RM-2) | 15d | 2011-11-15 | 2011-12-04 | I06P209201C0, IAFCI22001R20 FS+58d |  |  |  |  | 48d | 0d | SECONDARY STEEL [165 h]; STRUCTURAL STEEL [17 T(Fe)]; Cost |  |  | 335 | 962 | D03EY05503C0 | IC | C | 06 | P2 | SW | 055 | 03 | BILL 8 | B08 | S2 | 03 | R00 | ACF03 | b |  |  |  |  |  |  |  |  |  |  |  |  |  |  |  |  |  |  |  |
| I06P208103C0 |  | IC-06 ; Door Frames (PAT RM-2) | 36d | 2011-12-05 | 2012-01-16 | I06P209201C0, GNHE08101C0 FS+69d, I06P108103C0 SS+3d |  |  |  |  | 58.75d | 0d | ASSORTED DOORS [163 h]; Cost |  |  | 316 | 947 | I06P208103C0 | IC | C | 06 | P2 | DO | 081 | 03 | BILL 8 | B08 | S2 | DF | R00 | ACF06 | 081 |  |  |  | 08 |  |  |  |  |  |  |  |  |  |  |  |  |  |  |  |
| I06P223009C0 |  | IC-06 ; 2nd Fix, Inst of VAV'S CHW connection (PAT RM-2) | 42d | 2011-12-26 | 2012-02-14 | I06P223017C0 |  |  |  |  | 48d | 0d | MECHANICAL [901.2 h]; Cost |  |  |  |  | I06P223009C0 | IC | C | 06 | P2 | ME | 230 | 09 | BILL 8 | B08 | S2 | 2F | R00 | ACF07 | 230 |  | 2n | MEP |  |  |  |  |  |  |  |  |  |  |  |  |  |  |  |  |
| I06P205511C0 |  | IC-06 ; Wall reinforcement for MEP/Medical (PAT RM-2) | 24d | 2011-12-31 | 2012-01-28 | I06P209201C0, IAFCI22001R02 FS+58d |  |  |  |  | 26d | 0d | SECONDARY STEEL [50 h]; Cost |  |  |  |  | I06P205511C0 | IC | C | 06 | P2 | SW | 055 | 11 | BILL 8 | B08 | S2 | 03 | R00 | ACF03 | b |  |  |  |  |  |  |  |  |  |  |  |  |  |  |  |  |  |  |  |
| I06P201005C0 |  | IC-06 ; 2nd, Wall Inspection by Consultant (PAT RM-2) | 0d | 2012-01-17 | 2012-01-17 | I06P222011C0, I06P222015C0, I06P226009C0 |  |  |  |  | 36d | 10d | Cost |  |  |  |  | I06P201005C0 | IC | C | 06 | P2 | ME | 010 | 05 | BILL 8 | B08 | S2 | WI | R00 | ACF07 | 010 |  | 2n | MEP |  |  |  |  |  |  |  |  |  |  |  |  |  |  |  |  |
| I06P209205C0 |  | IC-06 ; Partitions Closing (PAT RM-2) | 48d | 2012-01-29 | 2012-03-25 | I06P201005C0, I06P205511C0, I06P209203C0, I06P222005C0, I06P222019C0, IAFOA09210C1 FF, I06P208103C0 FF, I06P221117C0 FF, IAFCI22001R20 FS+58d, I06P223023C0 |  |  |  |  | 26d | 0d | PARTITIONS [284 m]; PARTITIONS [3092 h]; Cost |  |  | 315 | 946 | I06P209205C0 | IC | C | 06 | P2 | PT | 092 | 05 | BILL 8 | B08 | S2 | FF | R00 | ACF06 | 092 |  |  | GP |  |  |  | P2F | R3 |  |  |  |  |  |  |  |  |  |  |  |
| I06P223015C0 |  | IC-06 ; 2nd Fix, Insulation of CHW pipe & Duct (PAT RM-2) | 42d | 2012-02-15 | 2012-04-03 | I06P223009C0, I06P223017C0, I06P223023C0 |  |  |  |  | 48d | 22d | MECHANICAL [3075.6 h]; Cost |  |  |  |  | I06P223015C0 | IC | C | 06 | P2 | ME | 230 | 15 | BILL 8 | B08 | S2 | 2F | R00 | ACF07 | 230 |  | 2n | MEP |  |  |  |  |  |  |  |  |  | 25 |  |  |  |  | zero |  |
| I06P207103C0 |  | IC-06 ; Waterproofing (PAT RM-2) | 12d | 2012-03-26 | 2012-04-08 | I06P208103C0, I06P209205C0 |  |  |  |  | 110d | 0d | THERMAL & MOISTURE [96 h]; THERMAL & MOISTURE [599 m2]; Cost |  |  | 105 | 999 | I06P207103C0 | IC | C | 06 | P2 | FF | 071 | 03 | BILL 8 | B08 | S2 | 01 | R00 | ACF03 | 071 |  |  |  |  |  |  |  |  |  |  |  |  |  |  |  |  |  |  |  |
| I06P209901C0 |  | IC-06 ; Wall Prime & 1st coat (PAT RM-2) | 30d | 2012-03-26 | 2012-04-29 | I06P209205C0 |  |  |  |  | 26d | 0d | WALL PAINT [577 h]; WALL PAINT [719 m2]; Cost |  |  | 328 | 956 | I06P209901C0 | IC | C | 06 | P2 | PA | 099 | 01 | BILL 8 | B08 | S2 | 01 | R00 | ACF06 | 099 |  |  |  |  |  |  |  |  |  |  |  |  |  |  |  |  |  |  |  |
| I06P226005C0 |  | IC-06 ; 2nd Fix, Wiring for Power/Lighting/Emergency (PAT RM-2) | 48d | 2012-03-26 | 2012-05-20 | I06P209205C0 |  |  |  |  | 104d | 0d | ELECTRICAL [213.6 h]; Cost |  |  |  |  | I06P226005C0 | IC | C | 06 | P2 | ME | 260 | 05 | BILL 8 | B08 | S2 | 2F | R00 | ACF07 | 260 |  | 2n | MEP |  |  |  |  |  |  |  |  |  |  |  |  |  |  |  |  |
| I06P226007C0 |  | IC-06 ; 2nd Fix, Cable Pulling (PAT RM-2) | 48d | 2012-03-26 | 2012-05-20 | I06P209201C0 SS+6d, I06P209205C0 |  |  |  |  | 140d | 114d | ELECTRICAL [2858.4 h]; Cost |  |  |  |  | I06P226007C0 | IC | C | 06 | P2 | ME | 260 | 07 | BILL 8 | B08 | S2 | 2F | R00 | ACF07 | 260 |  | 2n | MEP |  |  |  |  |  |  |  |  |  | 25 |  |  |  |  | zero |  |
| I06P226053C0 |  | IC-06 ; 2nd Fix, Wiring / Cabling (PAT RM-2) | 48d | 2012-03-26 | 2012-05-20 | I06P209203C0, I06P209205C0 |  |  |  |  | 140d | 114d | ELECTRICAL [213.6 h]; Cost |  |  | 389 | 977 | I06P226053C0 | IC | C | 06 | P2 | ME | 260 | 53 | BILL 8 | B08 | S2 | 2F | R00 | ACF07 | 260 |  | 2n | MEP |  |  |  |  |  |  |  |  |  |  |  |  |  |  |  |  |
| I06P227020C0 |  | IC-06 ; 2nd Fix, Inst of ELV Equipment (Panels) (PAT RM-2) | 60d | 2012-03-26 | 2012-06-03 | I06P209205C0 |  |  |  |  | 92d | 48d | ELECTRICAL [1041.6 h]; Cost |  |  |  |  | I06P227020C0 | IC | C | 06 | P2 | ME | 270 | 20 | BILL 8 | B08 | S2 | 2F | R00 | ACF04 | 270 |  | 2n | MEP |  |  |  |  |  |  |  |  |  |  |  |  |  |  |  | E |
| I06P226011C0 |  | IC-06 ; 2nd Fix, Inst of Equipment (DB) (PAT RM-2) | 66d | 2012-03-29 | 2012-06-13 | I06P209205C0, I06P126011C0 SS+3d |  |  |  |  | 42.25d | 0d | ELECTRICAL [1736.4 h]; Cost |  |  |  |  | I06P226011C0 | IC | C | 06 | P2 | ME | 260 | 11 | BILL 8 | B08 | S2 | 2F | R00 | ACF04 | 260 |  | 2n | MEP |  |  |  |  |  |  |  |  |  |  |  |  |  |  |  | E |
| I06P209305C0 |  | IC-06 ; Ceramic floor tile (PAT RM-2) | 24d | 2012-04-09 | 2012-05-06 | I06P207103C0 |  |  |  |  | 110d | 0d | CERAMIC FLOOR TILES [72 h]; CERAMIC FLOOR TILES [40 m2]; Cost |  |  | 106 | 1000 | I06P209305C0 | IC | C | 06 | P2 | FF | 093 | 05 | BILL 8 | B08 | S2 | 02 | R00 | ACF06 | CT |  |  |  |  |  |  |  |  |  |  |  |  |  |  |  |  |  |  |  |
| I06P205501C0 |  | IC-06 ; Handrails & balustrade (PAT RM-2) | 35d | 2012-04-30 | 2012-06-09 | I06P209901C0 |  |  |  |  | 27d | 1d | SECONDARY STEEL [263 h]; Cost |  |  |  |  | I06P205501C0 | IC | C | 06 | P2 | SW | 055 | 01 | BILL 8 | B08 | S2 | 01 | R00 | ACF03 | a |  |  |  |  |  |  |  |  |  |  |  |  |  |  |  |  |  |  |  |
| I06P209501C0 |  | IC-06 ; Ceiling Grid and Service Tile (PAT RM-2) | 36d | 2012-04-30 | 2012-06-10 | I06P205503C0, I06P209205C0, I06P221117C0, I06P223008C0, I06P223009C0, I06P223015C0, I06P227001C0, IAFCI22002R02 FS+58d, I06P209901C0 |  |  |  |  | 26d | 0d | CEILING GRID FOR GYPSUM [1504.83 h]; CEILING GRID FOR GYPSUM [128.64 m2]; Cost |  |  | 323 | 952 | I06P209501C0 | IC | C | 06 | P2 | CE | 095 | 01 | BILL 8 | B08 | S2 | 01 | R00 | ACF06 | 095 |  |  |  |  |  |  |  |  |  |  |  |  |  |  |  |  |  |  |  |
| I06P209510C0 |  | IC-06 ; Patient Lift Ceiling Rail (by others) (PAT RM-2) | 0d | 2012-04-30 | 2012-04-30 | I06P209501C0 SS |  |  |  |  | 158d | 132d | Cost |  |  | 323 | 952 | I06P109501C0 | IC | C | 06 | P2 | CE | 095 | 10 | BILL 8 | B08 | S2 | 02 | R00 | ACF06 | 095 |  |  |  |  |  |  |  |  |  |  |  |  |  |  |  |  |  |  |  |
| I06P222025C0 |  | IC-06 ; Final Fix, Inst of Sanitary Ware (PAT RM-2) | 36d | 2012-05-07 | 2012-06-18 | I06P209205C0, I06P209305C0, A10230 FS+148d |  |  |  |  | 110d | 0d | PLUMBING [1315.2 h]; Cost |  |  |  |  | I06P222025C0 | IC | C | 06 | P2 | ME | 220 | 25 | BILL 8 | B08 | S2 | FF | R00 | ACF07 | 220 |  | FF | MEP |  |  |  |  |  |  |  |  |  |  |  |  |  |  |  |  |
| I06P226015C0 |  | IC-06 ; Final Fix, Termination & Gladding of Cables (PAT RM-2) | 36d | 2012-05-21 | 2012-07-02 | I06P226005C0 |  |  |  |  | 104d | 78d | ELECTRICAL [158.4 h]; Cost |  |  |  |  | I06P226015C0 | IC | C | 06 | P2 | ME | 260 | 15 | BILL 8 | B08 | S2 | FF | R00 | ACF07 | 260 |  | FF | MEP |  |  |  |  |  |  |  |  |  |  |  |  |  |  |  |  |
| I06P209202C0 |  | IC-06 ; Rolling Shade (PAT RM-2) | 30d | 2012-06-11 | 2012-07-16 | I06P209501C0 |  |  |  |  | 134d | 108d | PARTITIONS [841 h]; Cost |  |  | 313 | 944 | I06P109201C0 | IC | C | 06 | P2 | FI | 092 | 02 | BILL 8 | B08 | S2 | 02 | R00 | ACF06 | 092 |  |  | GP |  |  |  |  |  |  |  |  |  |  |  |  |  |  |  |  |
| I06P209601C0 |  | IC-06 ; Flooring (Rubber,Terrazzo) (PAT RM-2) | 42d | 2012-06-11 | 2012-07-30 | I06P109601C0 FF, I06P209501C0, I06P205501C0 |  |  |  |  | 26d | 0d | TERRAZO FLOOR [528 h]; TERRAZO FLOOR [293 m2]; RUBBER FLOOR [198 m2]; RUBBER FLOOR [80 h]; Cost |  |  | 326 | 955 | I06P209601C0 | IC | C | 06 | P2 | FF | 096 | 01 | BILL 8 | B08 | S2 | 01 | R00 | ACF06 | RF |  |  |  |  |  |  |  |  |  |  |  |  |  |  |  |  |  |  |  |
| I06P209903C0 |  | IC-06 ; Wall Final Paint (PAT RM-2) | 30d | 2012-06-11 | 2012-07-16 | I06P209901C0, I06P209905C0, I06P209501C0 |  |  |  |  | 134d | 78d | WALL PAINT [311 h]; WALL PAINT [387 m2]; Cost |  |  | 329 | 957 | I06P209903C0 | IC | C | 06 | P2 | PA | 099 | 03 | BILL 8 | B08 | S2 | 02 | R00 | ACF06 | 099 |  |  |  |  |  |  |  |  |  |  |  |  |  |  |  |  |  |  |  |
| I06P209905C0 |  | IC-06 ; Ceiling Prime & 1st coat (PAT RM-2) | 0d | 2012-06-11 | 2012-06-11 | I06P209501C0 |  |  |  |  | 134d | 0d | Cost |  |  | 330 | 958 | I06P209905C0 | IC | C | 06 | P2 | PA | 099 | 05 | BILL 8 | B08 | S2 | 01 | R00 | ACF06 | 099 |  |  |  |  |  |  |  |  |  |  |  |  |  |  |  |  |  |  |  |
| I06P221115C0 |  | IC-06 ; 2nd Fix, Inst of Sprinkler droppers (PAT RM-2) | 48d | 2012-06-11 | 2012-08-06 | I06P209501C0 |  |  |  |  | 74d | 0d | MECHANICAL [800.4 h]; Cost |  |  |  |  | I06P221115C0 | IC | C | 06 | P2 | ME | 211 | 15 | BILL 8 | B08 | S2 | 2F | R00 | ACF07 | 211 |  | 2n | MEP |  |  |  |  |  |  |  |  |  |  |  |  |  |  |  |  |
| I06P223021C0 |  | IC-06 ; 2nd Fix, Inst of Flexible Duct & Plenum boxes (PAT RM-2) | 48d | 2012-06-11 | 2012-08-06 | I06P209205C0, I06P209501C0 |  |  |  |  | 74d | 0d | MECHANICAL [72 h]; Cost |  |  |  |  | I06P223021C0 | IC | C | 06 | P2 | ME | 230 | 21 | BILL 8 | B08 | S2 | 2F | R00 | ACF07 | 230 |  | 2n | MEP |  |  |  |  |  |  |  |  |  |  |  |  |  |  |  |  |
| I06P226003C0 |  | IC-06 ; Final Fix, Inst of Light fittings (PAT RM-2) | 54d | 2012-06-11 | 2012-08-13 | I06P209501C0 |  |  |  |  | 68d | 42d | ELECTRICAL [9577.2 h]; Cost |  |  |  |  | I06P226003C0 | IC | C | 06 | P2 | ME | 260 | 03 | BILL 8 | B08 | S2 | FF | R00 | ACF07 | 260 |  | FF | MEP |  |  |  |  |  |  |  |  |  |  |  |  |  |  |  |  |
| I06P226017C0 |  | IC-06 ; Final Fix, Inst of Ceiling rose (PAT RM-2) | 36d | 2012-06-11 | 2012-07-23 | I06P209501C0 |  |  |  |  | 86d | 60d | ELECTRICAL [33.6 h]; Cost |  |  |  |  | I06P226017C0 | IC | C | 06 | P2 | ME | 260 | 17 | BILL 8 | B08 | S2 | FF | R00 | ACF07 | 260 |  | FF | MEP |  |  |  |  |  |  |  |  |  |  |  |  |  |  |  |  |
| I06P227002C0 |  | IC-06 ; 2nd Fix, Wiring Droppers (PAT RM-2) | 48d | 2012-06-11 | 2012-08-06 | I06P209501C0 |  |  |  |  | 68d | 0d | ELECTRICAL [213.6 h]; Cost |  |  |  |  | I06P227002C0 | IC | C | 06 | P2 | ME | 270 | 02 | BILL 8 | B08 | S2 | 2F | R00 | ACF07 | 270 |  | 2n | MEP |  |  |  |  |  |  |  |  |  |  |  |  |  |  |  |  |
| I06P221113C0 |  | IC-06 ; Final Fix, Inst of Sprinklers head/ Extinguisher (PAT RM-2) | 36d | 2012-06-19 | 2012-07-30 | I06P209501C0, I06P221115C0 SS+6d |  |  |  |  | 80d | 54d | MECHANICAL [152.4 h]; Cost |  |  |  |  | I06P221113C0 | IC | C | 06 | P2 | ME | 211 | 13 | BILL 8 | B08 | S2 | FF | R00 | ACF07 | 211 |  | FF | MEP |  |  |  |  |  |  |  |  |  |  |  |  |  |  |  |  |
| I06P222021C0 |  | IC-06 ; Final Fix, Terminate Sanitary Ware & Appliances (PAT RM-2) | 36d | 2012-06-19 | 2012-07-30 | I06P222011C0, I06P222025C0 |  |  |  |  | 110d | 84d | PLUMBING [1315.2 h]; Cost |  |  |  |  | I06P222021C0 | IC | C | 06 | P2 | ME | 220 | 21 | BILL 8 | B08 | S2 | FF | R00 | ACF07 | 220 |  | FF | MEP |  |  |  |  |  |  |  |  |  |  |  |  |  |  |  |  |
| I06P223019C0 |  | IC-06 ; Final Fix, Inst of Grilles & Diffusers (PAT RM-2) | 36d | 2012-06-19 | 2012-07-30 | I06P209501C0, I06P223021C0 SS+6d |  |  |  |  | 80d | 54d | MECHANICAL [757.2 h]; Cost |  |  |  |  | I06P223019C0 | IC | C | 06 | P2 | ME | 230 | 19 | BILL 8 | B08 | S2 | FF | R00 | ACF07 | 230 |  | FF | MEP |  |  |  |  |  |  |  |  |  |  |  |  |  |  |  |  |
| I06P227030C0 |  | IC-06 ; Final Fix, Inst of ELV device (Detector/Speaker) (PAT RM-2) | 48d | 2012-06-19 | 2012-08-13 | I06P209501C0, I06P227002C0 SS+6d |  |  |  |  | 68d | 42d | ELECTRICAL [1707.6 h]; Cost |  |  |  |  | I06P227030C0 | IC | C | 06 | P2 | ME | 270 | 30 | BILL 8 | B08 | S2 | FF | R00 | ACF07 | 270 |  | FF | MEP |  |  |  |  |  |  |  |  |  |  |  |  |  |  |  |  |

| ID | WBS | Activity | Type | Duration | Start | Finish | Predecessors | Complete | Remaining | Planned start | Planned finish | Total float | Free float | Constraint | Resources | Cost | Actual cost | Change Order # | NEW ACTIVITY ID | change id | CCAD BUILDING(SET) | CCAD PHASE(SET) | CCAD FLOOR(SET) | CCAD ZONE(SET) | CCAD WORK(SET) | CCAD SECTION(SET) | CCAD SERIAL No.(SET) | CCAD CBS(SET) | CCAD BILL(SET) | CCAD HANDOVER(SET) | CCAD TAG(SET) | CCAD REV(SET) | CCADACF (SET) | CCAD SSCF | R3 Finish | CCAD DIVISION(SET) | CCAD SUB ZONE MEP(SET) | CCAD CSA | RENZ % COMPLETE | Act Selector % | user_number8 | user_integer1 | user_integer2 | user_number7 | July2011 Target% Complete | Claimed This Month | N_% | P_811 | P_711 | R3 Partitions | U% | FILTER | CCAD MEQ |
| --- | --- | --- | --- | --- | --- | --- | --- | --- | --- | --- | --- | --- | --- | --- | --- | --- | --- | --- | --- | --- | --- | --- | --- | --- | --- | --- | --- | --- | --- | --- | --- | --- | --- | --- | --- | --- | --- | --- | --- | --- | --- | --- | --- | --- | --- | --- | --- | --- | --- | --- | --- | --- | --- |
| I06P206101C0 |  | IC-06 ; Wood / caseworks (PAT RM-2) |  | 54d | 2012-07-31 | 2012-10-03 | I06CO04409C0, I06P209501C0, I06P209601C0, I06P209901C0, I06CO04401C0, IAFWA00103M0, IAFCI22002R02 FS+178d |  |  |  |  | 26d | 0d |  | WOOD WORK/CASEWORK [185.13 no]; WOOD WORK/CASEWORK [1485 h]; Cost |  |  | 332 | 960 | I06P206101C0 | IC | C | 06 | P2 | WO | 061 | 01 | BILL 8 | B08 | S2 | WW | R00 | ACF06 | 061 | R3 |  |  |  |  |  |  |  |  |  |  |  |  |  |  |  |  |  |  |
| I06P206102C0 |  | IC-06 ; Head/Foot Wall (PAT RM-2) |  | 36d | 2012-07-31 | 2012-09-12 | I06P209501C0, IAFWA00103M0, IAFCI22002R02 FS+178d, I06P206101C0 SS |  |  |  |  | 26d | 0d |  | WOOD WORK/CASEWORK [1483 h]; Cost |  |  | 332 | 960 | I06P206102C0 | IC | C | 06 | P2 | WO | 061 | 02 | BILL 8 | B08 | S2 | WW | R00 | ACF06 | 061 | R3 |  |  |  |  |  |  |  |  |  |  |  |  |  |  |  |  |  |  |
| I06P208107C0 |  | IC-06 ; Doors (PAT RM-2) |  | 36d | 2012-07-31 | 2012-09-12 | I06P208103C0, I06P209501C0, I06P209601C0, I06P209901C0 |  |  |  |  | 66d | 0d |  | ASSORTED DOORS [510 h]; ASSORTED DOORS [51 no]; Cost |  |  | 317 | 948 | I06P208107C0 | IC | C | 06 | P2 | DO | 081 | 07 | BILL 8 | B08 | S2 | DR | R00 | ACF06 | 081 |  | 08 |  |  |  |  |  |  |  |  |  |  |  |  |  |  |  |  |  |
| I06P209701C0 |  | IC-06 ; Wall finishes (ST, WD, WC) (PAT RM-2) |  | 36d | 2012-07-31 | 2012-09-12 | I06P226011C0, I06P227020C0, IAFCI22002R02 FS+158d, I06P209601C0 |  |  |  |  | 44d | 0d |  | ASSORTED WALL FINISH [307 h]; ASSORTED WALL FINISH [352 m2]; Cost |  |  | 105 | 1002 | I06P209701C0 | IC | C | 06 | P2 | WF | 097 | 01 | BILL 8 | B08 | S2 | 01 | R00 | ACF06 | 097 |  |  |  |  |  |  |  |  |  |  |  |  |  |  |  |  |  |  |  |
| I06P208709C0 |  | IC-06 ; Ironmongery (PAT RM-2) |  | 20d | 2012-09-13 | 2012-10-06 | I06P208107C0 |  |  |  |  | 66d | 40d |  | IRONMONGERY [240 h]; IRONMONGERY [24 no]; Cost |  |  | 322 | 951 | I06P208709C0 | IC | C | 06 | P2 | DO | 087 | 09 | BILL 8 | B08 | S2 | IM | R00 | ACF06 | 087 |  | 08 |  |  |  |  |  |  |  |  |  |  |  |  |  |  |  |  |  |
| I06P211001C0 |  | IC-06 ; Wall Protection (WP, CG, WG, FCG) (PAT RM-2) |  | 24d | 2012-09-13 | 2012-10-10 | I06P209701C0, I06P209903C0 SS |  |  |  |  | 62d | 36d |  | FF&E [37 h]; Cost |  |  | 326 | 1001 | I06P211001C0 | IC | C | 06 | P2 | WF | 110 | 01 | BILL 8 | B08 | S2 | 03 | R00 | ACF08 | b |  |  |  |  |  |  |  |  |  |  |  |  |  |  |  |  |  |  |  |
| I06P222029C0 |  | IC-06 ; Final Fix, Medical Gas pipe (PAT RM-2) |  | 18d | 2012-09-13 | 2012-10-03 | I06P209501C0, I06P206102C0 |  |  |  |  | 26d | 0d |  | PLUMBING [328.8 h]; Cost |  |  |  |  | I06P222029C0 | IC | C | 06 | P2 | ME | 220 | 29 | BILL 8 | B08 | S2 | FF | R00 | ACF07 | 220 |  |  | FF | MEP |  |  |  |  |  |  |  |  |  |  |  |  |  |  |  |
| I06P201006C0 |  | IC-06 ; 2nd, Ceiling Inspection by Consultants (PAT RM-2) |  | 0d | 2012-10-04 | 2012-10-04 | I06P221115C0, I06P223009C0, I06P223015C0, I06P227002C0, I06P209501C0, I06P221113C0, I06P222029C0, I06P223019C0, I06P226003C0, I06P226017C0, I06P227030C0, I06P226015C0 |  |  |  |  | 26d | 0d |  | Cost |  |  |  |  | I06P201006C0 | IC | C | 06 | P2 | ME | 010 | 06 | BILL 8 | B08 | S2 | CI | R00 | ACF07 | 010 |  |  | 2n | MEP |  |  |  |  |  |  |  |  |  |  |  |  |  |  |  |
| I06P209503C0 |  | IC-06 ; Ceiling closure - ACT/Gypsum (PAT RM-2) |  | 18d | 2012-10-04 | 2012-10-24 | I06P201006C0, I06P209510C0, I06P221115C0, I06P226005C0, I06P227001C0, I06P227002C0, IAFOA09509C1 FF, I06P206101C0, I06P209701C0, I06P223021C0, I06P226053C0, I06P226007C0, I08CO04455C0, I06CO04455C0 |  |  |  |  | 26d | 0d |  | ASSORTED CEILING FINISH [308.73 h]; CEILING GYPSUM [42.23 h]; ASSORTED CEILING FINISH [502 m2]; CEILING GYPSUM [129 m2]; Cost |  |  | 324 | 953 | I06P209503C0 | IC | C | 06 | P2 | CE | 095 | 03 | BILL 8 | B08 | S2 | 02 | R00 | ACF06 | 095 |  |  |  |  |  |  |  |  |  |  |  |  |  |  |  |  |  |  |  |
| I06P209672C1 |  | IC-06, Carpet Tile Finish (Patient Room-2) |  | 0d | 2012-10-25 | 2012-10-25 | I06P209907C0 SS, I06P209903C0 SS |  |  |  |  | 50d | 21.25d |  | Cost |  |  |  |  |  | IC | C | 06 | P2 | FF | 096 |  |  | B08 |  |  | R00 | ACF06 | CPT |  |  |  | CPT |  |  |  |  |  |  |  |  |  |  |  |  |  |  |  |
| I06P209907C0 |  | IC-06 ; Ceiling Final paint (PAT RM-2) |  | 0d | 2012-10-25 | 2012-10-25 | I06P209601C0, I06P209905C0, I06P209503C0 |  |  |  |  | 50d | 0d |  | Cost |  |  | 331 | 959 | I06P209907C0 | IC | C | 06 | P2 | PA | 099 | 07 | BILL 8 | B08 | S2 | 02 | R00 | ACF06 | 099 |  |  |  |  |  |  |  |  |  |  |  |  |  |  |  |  |  |  |  |
| I06P211003C0 |  | IC-06 ; FF & E (PAT RM-2) |  | 12d | 2012-10-25 | 2012-11-10 | I06P209601C0, I06P206101C0, I06P209503C0 |  |  |  |  | 38d | 12d |  | FF&E [387 h]; FF&E [206.37 no]; Cost |  |  | 333 | 961 | I06P211003C0 | IC | C | 06 | P2 | WO | 110 | 03 | BILL 8 | B08 | S2 | 04 | R00 | ACF08 | a |  |  |  |  |  |  |  |  |  |  |  |  |  |  |  |  |  |  |  |
| I06P226019C0 |  | IC-06 ; Final Fix, Inst of Switch/Sockets (PAT RM-2) |  | 12d | 2012-10-25 | 2012-11-10 | I06P209901C0, I06P209503C0 |  |  |  |  | 26d | 0d |  | ELECTRICAL [164.4 h]; Cost |  |  |  |  | I06P226019C0 | IC | C | 06 | P2 | ME | 260 | 19 | BILL 8 | B08 | S2 | FF | R00 | ACF07 | 260 |  |  | FF | MEP |  |  |  |  |  |  |  |  |  |  |  |  |  |  |  |
|  | 10 | **Precommissioning Tesing & snagging (PAT RM-2)** |  |  | 2012-11-11 | 2012-12-18 |  |  |  |  |  |  |  |  |  |  |  |  |  |  |  |  |  |  |  |  |  |  |  |  |  |  |  |  |  |  |  |  |  |  |  |  |  |  |  |  |  |  |  |  |  |  |  |
| I06TS01805C0 |  | IC-06 ; MEP de-snag, FIREM sign-off |  | 12d | 2012-11-11 | 2012-11-25 | I06P222025C0, I06P222027C0, I06P226015C0, I06P222021C0, I06P221113C0, I06P223019C0, I06P222029C0, I06P226017C0, I06P226003C0, I06P227030C0, I06P226019C0 |  |  |  |  | 26d | 0d |  | TESTING & COMMISSIONING [510 h]; Cost |  |  |  |  | I06TS01801C0 | IC | C | 06 | TS | SC | 018 | 01 | BILL 8 | B08 | S2 | 01 | R00 | ACF07 | 018 |  |  |  |  |  |  |  |  |  |  |  |  |  |  |  |  |  |  |  |
| I06TS01809C0 |  | IC-06 ; Touch-up & Clean / JV inspection /CIR /De-snag |  | 18d | 2012-11-26 | 2012-12-17 | I06CO04402C0, I06CO04403C0, I06CO04409C0, I06CO04411C0, I06P205501C0, I06P205511C0, I06P206101C0, I06P206102C0, I06P207103C0, I06P208103C0, I06P208107C0, I06P208709C0, I06P209201C0, I06P209202C0, I06P209203C0, I06P209205C0, I06P209305C0, I06P209501C0, I06P209503C0, I06P209510C0, I06P209601C0, I06P209701C0, I06P209901C0, I06P209903C0, I06P209905C0, I06P209907C0, I06P211001C0, I06P211003C0, I06P221113C0, I06P222021C0, I06P222025C0, I06P222027C0, I06P222029C0, I06P223019C0, I06P226003C0, I06P226015C0, I06P226017C0, I06P226019C0, I06P227030C0, I06TS01805C0 |  |  |  |  | 26d | 0d |  | TESTING & COMMISSIONING [128 h]; Cost |  |  |  |  | I06TS01802C0 | IC | C | 06 | TS | SC | 018 | 02 | BILL 8 | B08 | S2 | 02 | R00 | ACF07 | 018 |  |  |  |  |  |  |  |  |  |  |  |  |  |  |  |  |  |  |  |
| I06TS01813C0 |  | IC-06 ; Consultant's final de-snag inspection |  | 0d | 2012-12-18 | 2012-12-18 | I06TS01809C0, I06TS01814C0 |  |  |  |  | 26d | 5d |  | Cost |  |  |  |  | I06TS01803C0 | IC | C | 06 | TS | SC | 018 | 03 | BILL 8 | B08 | S2 | 03 | R00 | ACF07 | 018 |  |  |  |  |  |  |  |  |  |  |  |  |  |  |  |  |  |  |  |
|  | 05 | **Corridor, Central Station** |  |  | 2011-05-09 | 2012-11-28 |  |  |  |  |  |  |  |  |  |  |  |  |  |  |  |  |  |  |  |  |  |  |  |  |  |  |  |  |  |  |  |  |  |  |  |  |  |  |  |  |  |  |  |  |  |  |  |
| I06PA23001C0 |  | IC-06 ; 1st Fix, Inst. of Supports for MEP (Public Area) |  | 23d | 2011-05-09 A | 2011-05-24 A | I06S107807C0, I06S207807C0 | 100% |  | 2011-06-13 | 2011-07-11 |  |  |  | MECHANICAL [577.2 h]; Cost [32540.2 AED] | 32,540.18 | 32,540.18 |  |  | I06PA23001C0 | IC | C | 06 | PA | ME | 230 | 01 | BILL 8 | B08 | S2 | 1F | R00 | ACF04 | 230 |  |  | 1S | MEP | 100 | M1F |  |  |  |  |  |  |  |  |  |  |  |  |  |
| I06PA26013C0 |  | IC-06 ; 1st Fix, Inst of Cable Tray (Public Area) |  | 108d | 2011-05-11 A | 2011-10-12 | I06PA23001C0, I06PA27010C0 SS+12d, I06S107807C0, I06S207807C0 | 90% | 10.8d | 2011-08-11 | 2011-12-24 | 49.75d | 0d |  | ELECTRICAL [205.2 h]; Cost [11036 AED] | 11,035.96 | 9,932.36 |  |  | I06PA26013C0 | IC | C | 06 | PA | ME | 260 | 13 | BILL 8 | B08 | S2 | 1F | R00 | ACF04 | 260 |  |  | 1S | MEP | 10 | M1F | 0 | 0 | 0 | 0 | 75 | 8326.51 | 100 | 75 | 60 |  |  |  |  |
| I06PA09201C0 |  | IC-06 ; Metal Studs (Public Area) |  | 75d | 2011-05-15 A | 2011-11-03 | I06PA23001C0 SS+12d, IAFCI09201R02 FS+58d | 85% | 11.25d | 2011-06-30 | 2011-09-27 | 26.25d | 0d |  | PARTITIONS [4446 h]; PARTITIONS - Metal Studs [409 m]; Cost |  |  | 313 | 944 | I06PA09201C0 | IC | C | 06 | PA | PT | 092 | 01 | BILL 8 | B08 | S2 | 1F | R00 | ACF06 | 092 |  |  |  | GP | 10 | PMS |  |  |  |  |  | 149946.96 |  | 85 | 80 | R3 |  |  |  |
| I06PA22019C0 |  | IC-06 ; 1st Fix, Inst of Drainage pipe (ceiling) (Public Area) |  | 150d | 2011-05-17 A | 2011-10-26 | I06PA23001C0, I06PA26013C0 SS+12d | 85% | 22.5d | 2011-08-25 | 2012-02-27 | 49.75d | 0d |  | PLUMBING [630 h]; Cost [34080.3 AED] | 34,080.3 | 28,968.26 |  |  | I06PA22019C0 | IC | C | 06 | PA | ME | 220 | 19 | BILL 8 | B08 | S2 | 1F | R00 | ACF04 | 220 |  |  | 1S | MEP | 10 | M1F | 0 | 0 | 0 | 0 | 90 | 25679.72 | 100 | 85 | 80 |  | 85 |  |  |
| I06PA26001C0 |  | IC-06 ; 1st Fix, Inst of Trunking/Conduiting (Public Area) |  | 54d | 2011-05-21 A | 2011-08-30 A | I06PA23001C0, I06S107807C0, I06S207807C0 | 100% |  | 2011-07-12 | 2011-09-15 |  |  |  | ELECTRICAL [397.2 h]; Cost [20466.7 AED] | 20,466.68 | 20,466.68 |  |  | I06PA26001C0 | IC | C | 06 | PA | ME | 260 | 01 | BILL 8 | B08 | S2 | 1F | R00 | ACF04 | 260 |  |  | 1S | MEP | 10 | M1F |  |  |  |  | 75 | 15441.89 | 100 | 100 | 60 |  |  |  |  |
| I06PA21111C0 |  | IC-06 ; 1st Fix, Inst of Sprinkler main pipe (Public Area) |  | 120d | 2011-05-23 A | 2011-10-20 | I06PA22005C0 SS+14d, I06PA23001C0 | 85% | 18d | 2011-09-21 | 2012-02-16 | 49.75d | 0d |  | MECHANICAL [264 h]; Cost [14398.4 AED] | 14,398.38 | 12,238.62 |  |  | I06PA21111C0 | IC | C | 06 | PA | ME | 211 | 11 | BILL 8 | B08 | S2 | 1F | R00 | ACF04 | 211 |  |  | 1S | MEP | 30 | M1F | 0 | 0 | 0 | 0 | 95 | 10027.77 | 75 | 80 | 75 |  | 85 |  |  |
| I06PA27010C0 |  | IC-06 ; 1st Fix, Inst of Trunking for ELV system (Public Area) |  | 108d | 2011-05-23 A | 2011-10-25 | I06PA23001C0, I06PA26001C0 SS+14d, I06S107807C0, I06S207807C0 | 80% | 21.6d | 2011-07-28 | 2011-12-10 | 49.75d | 0d |  | ELECTRICAL [914.4 h]; Cost [47960 AED] | 47,960.04 | 38,368.03 |  |  | I06PA27010C0 | IC | C | 06 | PA | ME | 270 | 10 | BILL 8 | B08 | S2 | 1F | R00 | ACF04 | 270 |  |  | 1S | MEP | 10 | M1F | 0 | 0 | 0 | 0 | 75 | 36170.43 | 65 |  |  |  |  |  |  |
| I06PA23023C0 |  | IC-06 ; 1st Fix, Inst of Main Ducting (Public Area) |  | 108d | 2011-05-24 A | 2011-10-31 | I06PA23001C0, I06PA23017C0 SS+10d | 75% | 27d | 2011-10-19 | 2012-03-01 | 78.9d | 0d |  | MECHANICAL [7574.4 h]; Cost [413624 AED] | 413,624.26 | 310,218.2 |  |  | I06PA23023C0 | IC | C | 06 | PA | ME | 230 | 23 | BILL 8 | B08 | S2 | 1F | R00 | ACF04 | 230 |  |  | 1S | MEP | 15 | M1F | 0 | 0 | 0 | 0 | 50 | 167928.71 | 70 |  |  |  | 75 |  |  |
| I06PA22011C0 |  | IC-06 ; 2nd Fix, Drainage/Water pipe (wall) (Public Area) |  | 200d | 2011-06-02 A | 2011-12-14 | I06PA09201C0 | 85% | 30d | 2011-05-31 | 2012-01-30 | 56.25d | 30d |  | PLUMBING [1225.2 h]; Cost [34080.3 AED] | 34,080.3 | 28,968.26 |  |  | I06PA22011C0 | IC | C | 06 | PA | ME | 220 | 11 | BILL 8 | B08 | S2 | 2F | R00 | ACF07 | 220 |  |  | 2n | MEP |  |  |  |  |  |  | 25 |  | 75 | 85 | 75 |  | 85 |  |  |
| I06PA09203C0 |  | IC-06 ; Partitions early wall & 1st face (Public Area) |  | 75d | 2011-06-05 A | 2011-12-22 | I06PA09201C0, I06PA23023C0 FF | 50% | 37.5d | 2011-05-31 | 2011-08-28 | 48.75d | 22.5d |  | PARTITIONS [409 m]; PARTITIONS [3481 h]; Cost |  |  | 314 | 945 | I06PA09203C0 | IC | C | 06 | PA | PT | 092 | 03 | BILL 8 | B08 | S2 | 2F | R00 | ACF06 | 092 |  |  |  | GP |  | P1F |  |  |  |  |  |  |  | 50 | 20 |  |  |  |  |
| I06PA22005C0 |  | IC-06 ; 1st Fix, Inst of Water supply pipe (ceiling) (Public Area) |  | 108d | 2011-06-12 A | 2011-11-10 | I06PA22019C0 SS+7d, I06PA23001C0 | 70% | 32.4d | 2011-06-12 | 2011-10-19 | 49.75d | 0d |  | PLUMBING [1670.4 h]; Cost [90220.7 AED] | 90,220.67 | 63,154.47 |  |  | I06PA22005C0 | IC | C | 06 | PA | ME | 220 | 05 | BILL 8 | B08 | S2 | 1F | R00 | ACF04 | 220 |  |  | 1S | MEP |  | M1F | 0 | 0 | 0 | 0 | 70 | 31389.43 | 65 | 70 | 65 |  | 70 |  |  |
| I06PA23017C0 |  | IC-06 ; 1st Fix, Inst of CHW pipe (Public Area) |  | 108d | 2011-06-19 A | 2011-10-31 | I06PA21111C0 SS+14d, I06PA23001C0 | 75% | 27d | 2011-07-07 | 2011-11-16 | 49.75d | 0d |  | MECHANICAL [2832 h]; Cost [154640 AED] | 154,640.47 | 115,980.35 |  |  | I06PA23017C0 | IC | C | 06 | PA | ME | 230 | 17 | BILL 8 | B08 | S2 | 1F | R00 | ACF04 | 230 |  |  | 1S | MEP |  | M1F | 0 | 0 | 0 | 0 | 45 | 62783.05 | 50 | 75 | 50 |  | 75 |  |  |
| I06PA21117C0 |  | IC-06 ; 1st Fix, Inst of Sprinkler branch pipe (Public Area) |  | 90d | 2011-06-20 A | 2011-11-22 | I06PA09201C0, I06PA21111C0 | 85% | 13.5d | 2011-08-01 | 2011-11-19 | 108.75d | 82.5d |  | MECHANICAL [609.6 h]; Cost [33303.7 AED] | 33,303.68 | 28,308.12 |  |  | I06PA21117C0 | IC | C | 06 | PA | ME | 211 | 17 | BILL 8 | B08 | S2 | 1F | R00 | ACF04 | 211 |  |  | 1S | MEP |  | M1F | 0 | 0 | 0 | 0 | 90 | 11580.1 | 45 | 50 | 45 |  | 85 |  |  |
| I06PA23008C0 |  | IC-06 ; 1st Fix, Inst of VCD's/FD's (Public Area) |  | 48d | 2011-09-05 A | 2011-12-29 | I06PA23023C0 | 5% | 45.6d | 2011-10-09 | 2011-12-10 | 78.9d | 52.65d |  | MECHANICAL [910.8 h]; Cost [49161.7 AED] | 49,161.67 | 2,458.08 |  |  | I06PA23008C0 | IC | C | 06 | PA | ME | 230 | 08 | BILL 8 | B08 | S2 | 1F | R00 | ACF04 | 230 |  |  | 1S | MEP |  | M1F |  |  |  |  | 10 |  |  |  |  |  | 5 | zero |  |
| I06PA27001C0 |  | IC-06 ; 1st Fix, Wiring/ Cabling work (Public Area) |  | 48d | 2011-10-25 | 2011-12-26 | I06PA26001C0, I06PA26013C0, I06PA27010C0 |  |  |  |  | 127.15d | 85.65d |  | ELECTRICAL [213.6 h]; Cost |  |  |  |  | I06PA27001C0 | IC | C | 06 | PA | ME | 270 | 01 | BILL 8 | B08 | S2 | 1F | R00 | ACF04 | 270 |  |  | 1S | MEP |  | M1F |  |  |  |  | 50 |  |  |  |  |  |  | zero |  |
| I06PA23009C0 |  | IC-06 ; 2nd Fix, Inst of VAV'S CHW connection (Public Area) |  | 66d | 2011-11-01 | 2012-01-23 | I06PA23017C0 |  |  |  |  | 49.75d | 0d |  | MECHANICAL [5888.4 h]; Cost |  |  |  |  | I06PA23009C0 | IC | C | 06 | PA | ME | 230 | 09 | BILL 8 | B08 | S2 | 2F | R00 | ACF07 | 230 |  |  | 2n | MEP |  |  |  |  |  |  | 25 |  |  |  |  |  |  | zero |  |
| I06PA26009C0 |  | IC-06 ; 2nd Fix, Inst of Wall conduites (Public Area) |  | 60d | 2011-11-03 | 2012-01-19 | I06PA09201C0 |  |  |  |  | 26.25d | 0d |  | ELECTRICAL [4792.8 h]; Cost |  |  |  |  | I06PA26009C0 | IC | C | 06 | PA | ME | 260 | 09 | BILL 8 | B08 | S2 | 2F | R00 | ACF07 | 260 |  |  | 2n | MEP |  |  |  |  |  |  | 20 |  |  |  |  |  |  | zero |  |
| I06PA40302C0 |  | IC-06 ; 2nd Fix, Pneumatic tube (Public Area) |  | 48d | 2011-11-03 | 2012-01-05 | I06PA09201C0 |  |  |  |  | 38.25d | 12d |  | MECHANICAL [2200.8 h]; Cost |  |  |  |  | C03E140302C0 | IC | C | 06 | PA | ME | 403 | 02 | BILL 8 | B08 | S2 | 2F | R00 | ACF07 | 403 |  |  | 2n | MEP |  |  |  |  |  |  |  |  |  |  |  |  |  |  |  |
| I06PA08103C0 |  | IC-06 ; Door Frames (Public Area) |  | 36d | 2011-12-08 | 2012-01-19 | I06PA09201C0, GNHE08101C0 FS+69d, I06P208103C0 SS+3d |  |  |  |  | 58.75d | 0d |  | ASSORTED DOORS [235 h]; Cost |  |  | 316 | 947 | I06PA08103C0 | IC | C | 06 | PA | DO | 081 | 03 | BILL 8 | B08 | S2 | DF | R00 | ACF06 | 081 |  | 08 |  |  |  |  |  |  |  |  |  |  |  |  |  |  |  |  |  |
| I06PA01005C0 |  | IC-06 ; 2nd, Wall Inspection by Consultant (Public Area) |  | 0d | 2012-01-19 | 2012-01-19 | I06PA22011C0, I06PA26009C0, I06PA40302C0 |  |  |  |  | 26.25d | 0d |  | Cost |  |  |  |  | I06PA01005C0 | IC | C | 06 | PA | ME | 010 | 05 | BILL 8 | B08 | S2 | WI | R00 | ACF07 | 010 |  |  | 2n | MEP |  |  |  |  |  |  |  |  |  |  |  |  |  |  |  |
| I06PA09205C0 |  | IC-06 ; Partitions Closing (Public Area) |  | 36d | 2012-01-19 | 2012-03-03 | I06PA01005C0, I06PA09203C0, I06PA22005C0, I06PA22019C0, IAFOA09210C1 FF, IAFCI22001R02 FS+58d, I06PA08103C0 FF, I06PA21117C0 FF, I06PA23008C0 FF |  |  |  |  | 26.25d | 0d |  | PARTITIONS [409 m]; PARTITIONS [4467 h]; Cost |  |  | 315 | 946 | I06PA09205C0 | IC | C | 06 | PA | PT | 092 | 05 | BILL 8 | B08 | S2 | FF | R00 | ACF06 | 092 |  |  |  | GP |  | P2F |  |  |  |  |  |  |  |  |  | R3 |  |  |  |
| I06PA23015C0 |  | IC-06 ; 2nd Fix, Insulation of CHW pipe & Duct (Public Area) |  | 54d | 2012-01-24 | 2012-03-27 | I06PA23009C0, I06PA23017C0, I06PA23023C0 |  |  |  |  | 49.75d | 8.25d |  | MECHANICAL [3075.6 h]; Cost |  |  |  |  | I06PA23015C0 | IC | C | 06 | PA | ME | 230 | 15 | BILL 8 | B08 | S2 | 2F | R00 | ACF07 | 230 |  |  | 2n | MEP |  |  |  |  |  |  | 25 |  |  |  |  |  |  | zero |  |
| I06PA09602C03 |  | IC-06 ; Flooring (Stone) (Public Area) | milestone | 0d | 2012-03-01 | 2012-03-01 | MGNMI00101M0 |  |  |  |  | 120.75d | 67.25d | start on or after 2012-03-01 |  |  |  | 326 | 955 | I06PA09601C0 | IC | C | 06 | PA | FF | 096 | 01 | BILL 8 | B08 | S2 | 09 | R00 | ACF06 | ST |  |  |  |  |  |  |  |  |  |  |  |  |  |  |  |  |  |  |  |
| I06PA09901C0 |  | IC-06 ; Wall Prime & 1st coat (Public Area) |  | 30d | 2012-03-03 | 2012-04-07 | I06PA09205C0 |  |  |  |  | 41.5d | 0d |  | WALL PAINT [834 h]; WALL PAINT [1040 m2]; Cost |  |  | 328 | 956 | I06PA09901C0 | IC | C | 06 | PA | PA | 099 | 01 | BILL 8 | B08 | S2 | 01 | R00 | ACF06 | 099 |  |  |  |  |  |  |  |  |  |  |  |  |  |  |  |  |  |  |  |
| I06PA26005C0 |  | IC-06 ; 2nd Fix, Wiring for Power/Lighting/Emergency (Public Area) |  | 48d | 2012-03-03 | 2012-04-28 | I06PA09205C0 |  |  |  |  | 113.5d | 0d |  | ELECTRICAL [213.6 h]; Cost |  |  |  |  | I06PA26005C0 | IC | C | 06 | PA | ME | 260 | 05 | BILL 8 | B08 | S2 | 2F | R00 | ACF07 | 260 |  |  | 2n | MEP |  |  |  |  |  |  |  |  |  |  |  |  |  |  |  |
| I06PA26007C0 |  | IC-06 ; 2nd Fix, Cable Pulling (Public Area) |  | 48d | 2012-03-03 | 2012-04-28 | I06PA09201C0 SS+6d, I06PA09205C0 |  |  |  |  | 149.5d | 108d |  | ELECTRICAL [2858.4 h]; Cost |  |  |  |  | I06PA26007C0 | IC | C | 06 | PA | ME | 260 | 07 | BILL 8 | B08 | S2 | 2F | R00 | ACF07 | 260 |  |  | 2n | MEP |  |  |  |  |  |  | 25 |  |  |  |  |  |  | zero |  |
| I06PA26053C0 |  | IC-06 ; 2nd Fix, Wiring / Cabling (Public Area) |  | 48d | 2012-03-03 | 2012-04-28 | I06PA09203C0, I06PA09205C0 |  |  |  |  | 149.5d | 108d |  | ELECTRICAL [213.6 h]; Cost |  |  | 389 | 977 | I06PA26053C0 | IC | C | 06 | PA | ME | 260 | 53 | BILL 8 | B08 | S2 | 2F | R00 | ACF07 | 260 |  |  | 2n | MEP |  |  |  |  |  |  |  |  |  |  |  |  |  |  |  |
| I06PA27020C0 |  | IC-06 ; 2nd Fix, Inst of ELV Equipment (Panels) (Public Area) |  | 60d | 2012-03-03 | 2012-05-12 | I06PA09205C0 |  |  |  |  | 101.5d | 48d |  | ELECTRICAL [1287.6 h]; Cost |  |  |  |  | I06PA27020C0 | IC | C | 06 | PA | ME | 270 | 20 | BILL 8 | B08 | S2 | 2F | R00 | ACF04 | 270 |  |  | 2n | MEP |  |  |  |  |  |  |  |  |  |  |  |  |  |  | E |
| I06PA26011C0 |  | IC-06 ; 2nd Fix, Inst of Equipment (DB) (Public Area) |  | 66d | 2012-04-02 | 2012-06-18 | I06PA09205C0, I06P226011C0 SS+3d |  |  |  |  | 42.25d | 0d |  | ELECTRICAL [1736.4 h]; Cost |  |  |  |  | I06PA26011C0 | IC | C | 06 | PA | ME | 260 | 11 | BILL 8 | B08 | S2 | 2F | R00 | ACF04 | 260 |  |  | 2n | MEP |  |  |  |  |  |  |  |  |  |  |  |  |  |  | E |
| I06PA05501C0 |  | IC-06 ; Handrails & balustrade (Public Area) |  | 36d | 2012-04-07 | 2012-05-19 | I06PA09901C0, IAFT805509C0 |  |  |  |  | 83.5d | 0d |  | SECONDARY STEEL [362 h]; Cost |  |  |  |  | I06PA05501C0 | IC | C | 06 | PA | SW | 055 | 01 | BILL 8 | B08 | S2 | 01 | R00 | ACF03 | a |  |  |  |  |  |  |  |  |  |  |  |  |  |  |  |  |  |  |  |
| I06PA09501C0 |  | IC-06 ; Ceiling Grid and Service Tile (Public Area) |  | 36d | 2012-04-07 | 2012-05-19 | I06PA09205C0, I06PA21117C0, I06PA23008C0, I06PA23009C0, I06PA23015C0, I06PA27001C0, IAFCI22002R02 FS+58d, I06PA09901C0 |  |  |  |  | 41.5d | 0d |  | CEILING GRID FOR GYPSUM [2074.62 h]; CEILING GRID FOR GYPSUM [177.49 m2]; Cost |  |  | 323 | 952 | I06PA09501C0 | IC | C | 06 | PA | CE | 095 | 01 | BILL 8 | B08 | S2 | 01 | R00 | ACF06 | 095 | R3 |  |  |  |  |  |  |  |  |  |  |  |  |  |  |  |  |  |  |
| I06PA26015C0 |  | IC-06 ; Final Fix, Termination & Gladding of Cables (Public Area) |  | 36d | 2012-04-28 | 2012-06-09 | I06PA26005C0 |  |  |  |  | 113.5d | 72d |  | ELECTRICAL [158.4 h]; Cost |  |  |  |  | I06PA26015C0 | IC | C | 06 | PA | ME | 260 | 15 | BILL 8 | B08 | S2 | FF | R00 | ACF07 | 260 |  |  | FF | MEP |  |  |  |  |  |  |  |  |  |  |  |  |  |  |  |
| I06PA09601C0 |  | IC-06 ; Flooring (Terrazzo) (Public Area) |  | 42d | 2012-05-19 | 2012-07-08 | I06PA09205C0, OGNMU00035S0 SS+6d, OGNMU00051S0, IAFCI22002R02 FS+58d, I06PA09501C0, I06PA05501C0 |  |  |  |  | 83.5d | 0d |  | TERRAZO FLOOR [728 h]; TERRAZO FLOOR [404 m2]; Cost |  |  | 326 | 955 | I06PA09601C0 | IC | C | 06 | PA | FF | 096 | 01 | BILL 8 | B08 | S2 | 07 | R00 | ACF06 | TZ | R3 |  |  |  |  |  |  |  |  |  |  |  |  |  |  |  |  |  |  |
| I06PA09602C0 |  | IC-06 ; Flooring (Stone) (Public Area) |  | 42d | 2012-05-19 | 2012-07-08 | I06PA09205C0, OGNMU00035S0 SS+6d, OGNMU00051S0, IAFCI22002R02 FS+58d, I06PA09602C03, I06PA09501C0 |  |  |  |  | 53.5d | 0d |  | STONE FLOOR [804 h]; STONE FLOOR [892 m2]; Cost |  |  | 326 | 955 | I06PA09601C0 | IC | C | 06 | PA | FF | 096 | 01 | BILL 8 | B08 | S2 | 09 | R00 | ACF06 | ST | R3 |  |  |  |  |  |  |  |  |  |  |  |  |  |  |  |  |  |  |
| I06PA09903C0 |  | IC-06 ; Wall Final Paint (Public Area) |  | 30d | 2012-05-19 | 2012-06-24 | I06PA09901C0, I06PA09905C0, I06PA09501C0 |  |  |  |  | 155.5d | 78d |  | WALL PAINT [449 h]; WALL PAINT [560 m2]; Cost |  |  | 329 | 957 | I06PA09903C0 | IC | C | 06 | PA | PA | 099 | 03 | BILL 8 | B08 | S2 | 02 | R00 | ACF06 | 099 |  |  |  |  |  |  |  |  |  |  |  |  |  |  |  |  |  |  |  |
| I06PA09905C0 |  | IC-06 ; Ceiling Prime & 1st coat (Public Area) |  | 0d | 2012-05-19 | 2012-05-19 | I06PA09501C0 |  |  |  |  | 155.5d | 0d |  | Cost |  |  | 330 | 958 | I06PA09905C0 | IC | C | 06 | PA | PA | 099 | 05 | BILL 8 | B08 | S2 | 01 | R00 | ACF06 | 099 |  |  |  |  |  |  |  |  |  |  |  |  |  |  |  |  |  |  |  |
| I06PA21115C0 |  | IC-06 ; 2nd Fix, Inst of Sprinkler droppers (Public Area) |  | 48d | 2012-05-19 | 2012-07-15 | I06PA09501C0 |  |  |  |  | 47.5d | 0d |  | MECHANICAL [1239.6 h]; Cost |  |  |  |  | I06PA21115C0 | IC | C | 06 | PA | ME | 211 | 15 | BILL 8 | B08 | S2 | 2F | R00 | ACF07 | 211 |  |  | 2n | MEP |  |  |  |  |  |  |  |  |  |  |  |  |  |  |  |
| I06PA23021C0 |  | IC-06 ; 2nd Fix, Inst of Flexible Duct & Plenum boxes (Public Area) |  | 48d | 2012-05-19 | 2012-07-15 | I06PA09205C0, I06PA09501C0 |  |  |  |  | 47.5d | 0d |  | MECHANICAL [72 h]; Cost |  |  |  |  | I06PA23021C0 | IC | C | 06 | PA | ME | 230 | 21 | BILL 8 | B08 | S2 | 2F | R00 | ACF07 | 230 |  |  | 2n | MEP |  |  |  |  |  |  |  |  |  |  |  |  |  |  |  |
| I06PA26017C0 |  | IC-06 ; Final Fix, Inst of Ceiling rose (Public Area) |  | 36d | 2012-05-19 | 2012-07-01 | I06PA09501C0 |  |  |  |  | 41.5d | 0d |  | ELECTRICAL [33.6 h]; Cost |  |  |  |  | I06PA26017C0 | IC | C | 06 | PA | ME | 260 | 17 | BILL 8 | B08 | S2 | FF | R00 | ACF07 | 260 |  |  | FF | MEP |  |  |  |  |  |  |  |  |  |  |  |  |  |  |  |
| I06PA27002C0 |  | IC-06 ; 2nd Fix, Wiring Droppers (Public Area) |  | 48d | 2012-05-19 | 2012-07-15 | I06PA09501C0 |  |  |  |  | 77.5d | 0d |  | ELECTRICAL [213.6 h]; Cost |  |  |  |  | I06PA27002C0 | IC | C | 06 | PA | ME | 270 | 02 | BILL 8 | B08 | S2 | 2F | R00 | ACF07 | 270 |  |  | 2n | MEP |  |  |  |  |  |  |  |  |  |  |  |  |  |  |  |
| I06PA40303C0 |  | IC-06 ; Final Fix, Pneumatic Station (Public Area) |  | 48d | 2012-05-19 | 2012-07-15 | I06PA09501C0 |  |  |  |  | 83.5d | 42d |  | MECHANICAL [2031.6 h]; Cost |  |  |  |  | C03E140303C0 | IC | C | 06 | PA | ME | 403 | 03 | BILL 8 | B08 | S2 | FF | R00 | ACF07 | 403 |  |  | FF | MEP |  |  |  |  |  |  |  |  |  |  |  |  |  |  |  |
| I06PA27030C0 |  | IC-06 ; Final Fix, Inst of ELV device (Detector/Speaker) (Public Area) |  | 48d | 2012-05-26 | 2012-07-22 | I06PA27002C0 SS+6d, I06PA09205C0 |  |  |  |  | 77.5d | 36d |  | ELECTRICAL [1707.6 h]; Cost |  |  |  |  | I06PA27030C0 | IC | C | 06 | PA | ME | 270 | 30 | BILL 8 | B08 | S2 | FF | R00 | ACF07 | 270 |  |  | FF | MEP |  |  |  |  |  |  |  |  |  |  |  |  |  |  |  |
| I06PA26003C0 |  | IC-06 ; Final Fix, Inst of Light fittings (Public Area) |  | 54d | 2012-07-01 | 2012-09-04 | I06PA09501C0, I06PA26017C0 |  |  |  |  | 41.5d | 0d |  | ELECTRICAL [9577.2 h]; Cost |  |  |  |  | I06PA26003C0 | IC | C | 06 | PA | ME | 260 | 03 | BILL 8 | B08 | S2 | FF | R00 | ACF07 | 260 |  |  | FF | MEP |  |  |  |  |  |  |  |  |  |  |  |  |  |  |  |
| I06PA08107C0 |  | IC-06 ; Doors (Public Area) |  | 36d | 2012-07-08 | 2012-08-21 | I06PA08103C0, I06PA09501C0, I06PA09601C0, I06PA09901C0, I06PA09602C0 |  |  |  |  | 83.5d | 0d |  | ASSORTED DOORS [740 h]; ASSORTED DOORS [74 no]; Cost |  |  | 317 | 948 | I06PA08107C0 | IC | C | 06 | PA | DO | 081 | 07 | BILL 8 | B08 | S2 | DR | R00 | ACF06 | 081 |  | 08 |  |  |  |  |  |  |  |  |  |  |  |  |  |  |  |  |  |
| I06PA09701C0 |  | IC-06 ; Wall finishes (ST, WD, WC) (Public Area) |  | 36d | 2012-07-08 | 2012-08-21 | I06PA26011C0, I06PA27020C0, TVT0114211C0, TVT0214211C0, TVT1214211C0, IAFCI22002R02 FS+158d, I06PA09602C03, I06PA09602C0 |  |  |  |  | 53.5d | 0d |  | ASSORTED WALL FINISH [442 h]; ASSORTED WALL FINISH [507 m2]; Cost |  |  | 105 | 1002 | I06PA09701C0 | IC | C | 06 | PA | WF | 097 | 01 | BILL 8 | B08 | S2 | 01 | R00 | ACF06 | 097 |  |  |  |  |  |  |  |  |  |  |  |  |  |  |  |  |  |  |  |
| I06PA21113C0 |  | IC-06 ; Final Fix, Inst of Sprinklers head/ Extinguisher (Public Area) |  | 36d | 2012-07-15 | 2012-08-28 | I06PA09501C0, I06PA21115C0 |  |  |  |  | 47.5d | 6d |  | MECHANICAL [152.4 h]; Cost |  |  |  |  | I06PA21113C0 | IC | C | 06 | PA | ME | 211 | 13 | BILL 8 | B08 | S2 | FF | R00 | ACF07 | 211 |  |  | FF | MEP |  |  |  |  |  |  |  |  |  |  |  |  |  |  |  |
| I06PA23019C0 |  | IC-06 ; Final Fix, Inst of Grilles & Diffusers (Public Area) |  | 36d | 2012-07-15 | 2012-08-28 | I06PA09501C0, I06PA23021C0 |  |  |  |  | 47.5d | 6d |  | MECHANICAL [757.2 h]; Cost |  |  |  |  | I06PA23019C0 | IC | C | 06 | PA | ME | 230 | 19 | BILL 8 | B08 | S2 | FF | R00 | ACF07 | 230 |  |  | FF | MEP |  |  |  |  |  |  |  |  |  |  |  |  |  |  |  |
| I06PA08709C0 |  | IC-06 ; Ironmongery (Public Area) |  | 24d | 2012-08-21 | 2012-09-18 | I06PA08107C0 |  |  |  |  | 83.5d | 42d |  | IRONMONGERY [340 h]; IRONMONGERY [34 no]; Cost |  |  | 322 | 951 | I06PA08709C0 | IC | C | 06 | PA | DO | 087 | 09 | BILL 8 | B08 | S2 | IM | R00 | ACF06 | 087 |  | 08 |  |  |  |  |  |  |  |  |  |  |  |  |  |  |  |  |  |
| I06PA11001C0 |  | IC-06 ; Wall Protection (WP, CG, WG, FCG) (Public Area) |  | 24d | 2012-08-21 | 2012-09-18 | I06PA09701C0, I06PA09903C0 SS |  |  |  |  | 83.5d | 42d |  | FF&E [53 h]; Cost |  |  | 326 | 1001 | I06PA11001C0 | IC | C | 06 | PA | WF | 110 | 01 | BILL 8 | B08 | S2 | 03 | R00 | ACF08 | b |  |  |  |  |  |  |  |  |  |  |  |  |  |  |  |  |  |  |  |
| I06PA11009C0 |  | IC-06 ; Signage (Public Area) |  | 14.88d | 2012-08-21 | 2012-09-08 | I06PA09701C0 |  |  |  |  | 92.62d | 51.12d |  | SIGNAGES [168 h]; SIGNAGES [168.24 no]; Cost |  |  | 322 | 951 | I06PA11009C0 | IC | C | 06 | PA | SA | 110 | 09 | BILL 8 | B08 | S2 | 09 | R00 | ACF08 | c |  | 08 |  |  |  |  |  |  |  |  |  |  |  |  |  |  |  |  |  |
| I06PA01006C0 |  | IC-06 ; 2nd, Ceiling Inspection by Consultants (Public Area) |  | 0d | 2012-09-04 | 2012-09-04 | I06PA21115C0, I06PA23009C0, I06PA23015C0, I06PA27002C0, I06PA09501C0, I06PA21113C0, I06PA23019C0, I06PA26003C0, I06PA26017C0, I06PA27030C0, I06PA40303C0, I06PA26015C0 |  |  |  |  | 41.5d | 0d |  | Cost |  |  |  |  | I06PA01006C0 | IC | C | 06 | PA | ME | 010 | 06 | BILL 8 | B08 | S2 | CI | R00 | ACF07 | 010 |  |  | 2n | MEP |  |  |  |  |  |  |  |  |  |  |  |  |  |  |  |
| I06PA09503C0 |  | IC-06 ; Ceiling closure - ACT/Gypsum (Public Area) |  | 24d | 2012-09-04 | 2012-10-02 | I06PA01006C0, I06PA21115C0, I06PA26005C0, I06PA27001C0, I06PA27002C0, IAFOA09509C1 FF, I06PA09701C0, I06PA23021C0, I06PA26053C0, I06PA26007C0 |  |  |  |  | 41.5d | 0d |  | ASSORTED CEILING FINISH [426.19 h]; CEILING GYPSUM [58.22 h]; ASSORTED CEILING FINISH [693 m2]; CEILING GYPSUM [177 m2]; Cost |  |  | 324 | 953 | I06PA09503C0 | IC | C | 06 | PA | CE | 095 | 03 | BILL 8 | B08 | S2 | 02 | R00 | ACF06 | 095 | R3 |  |  |  |  |  |  |  |  |  |  |  |  |  |  |  |  |  |  |

| ID | WBS | Activity | Duration | Start | Finish | Predecessors | Complete | Remaining | Planned start | Planned finish | Total float | Free float | Resources | Cost | Actual cost | Change Order # | NEW ACTIVITY ID | change id | CCAD BUILDING(SET) | CCAD PHASE(SET) | CCAD FLOOR(SET) | CCAD ZONE(SET) | CCAD WORK(SET) | CCAD SECTION(SET) | CCAD SERIAL No.(SET) | CCAD CBS(SET) | CCAD BILL(SET) | CCAD HANDOVER(SET) | CCAD TAG(SET) | CCAD REV(SET) | CCADACF (SET) | CCAD SSCF | CCAD SUB ZONE MEP(SET) | CCAD CSA | RENZ % COMPLETE | Claimed This Month | Act Selector % | user_number8 | user_integer1 | user_integer2 | user_number7 | U% | CCAD MEQ | July2011 Target% Complete | FILTER | CCAD DIVISION(SET) | IDDD |
| --- | --- | --- | --- | --- | --- | --- | --- | --- | --- | --- | --- | --- | --- | --- | --- | --- | --- | --- | --- | --- | --- | --- | --- | --- | --- | --- | --- | --- | --- | --- | --- | --- | --- | --- | --- | --- | --- | --- | --- | --- | --- | --- | --- | --- | --- | --- | --- |
| I06PA09907C0 |  | IC-06 ; Ceiling Final paint (Public Area) | 0d | 2012-10-02 | 2012-10-02 | I06PA09601C0, I06PA09905C0, I06PA09602C0, I06PA09503C0 |  |  |  |  | 71.5d | 30d | Cost |  |  | 331 | 959 | I06PA09907C0 | IC | C | 06 | PA | PA | 099 | 07 | BILL 8 | B08 | S2 | 02 | R00 | ACF06 | 099 |  |  |  |  |  |  |  |  |  |  |  |  |  |  |  |
| I06PA26019C0 |  | IC-06 ; Final Fix, Inst of Switch/Sockets (Public Area) | 18d | 2012-10-02 | 2012-10-23 | I06PA09901C0, I06PA09503C0 |  |  |  |  | 41.5d | 0d | ELECTRICAL [164.4 h]; Cost |  |  |  |  | I06PA26019C0 | IC | C | 06 | PA | ME | 260 | 19 | BILL 8 | B08 | S2 | FF | R00 | ACF07 | 260 | FF | MEP |  |  |  |  |  |  |  |  |  |  |  |  |  |
|  | 10 | **Precommissioning Tesing & snagging (Corridor, Central Station)** |  | 2012-10-23 | 2012-11-28 |  |  |  |  |  |  |  |  |  |  |  |  |  |  |  |  |  |  |  |  |  |  |  |  |  |  |  |  |  |  |  |  |  |  |  |  |  |  |  |  |  |  |
| I06TS01806C0 |  | IC-06 ; MEP de-snag, FIREM sign-off | 12d | 2012-10-23 | 2012-11-08 | I06PA26015C0, I06PA21113C0, I06PA23019C0, I06PA26017C0, I06PA26003C0, I06PA27030C0, I06PA40303C0, I06PA26019C0 |  |  |  |  | 41.5d | 0d | TESTING & COMMISSIONING [510 h]; Cost |  |  |  |  | I06TS01801C0 | IC | C | 06 | TS | SC | 018 | 01 | BILL 8 | B08 | S2 | 01 | R00 | ACF07 | 018 |  |  |  |  |  |  |  |  |  |  |  |  |  |  |  |
| I06TS01810C0 |  | IC-06 ; Touch-up & Clean / JV inspection /CIR /De-snag | 16.25d | 2012-11-08 | 2012-11-28 | I06CO04402C0, I06CO04403C0, I06CO04409C0, I06CO04411C0, I06PA05501C0, I06PA08103C0, I06PA08107C0, I06PA08709C0, I06PA09203C0, I06PA09205C0, I06PA09501C0, I06PA09503C0, I06PA09601C0, I06PA09701C0, I06PA09901C0, I06PA09903C0, I06PA09905C0, I06PA09907C0, I06PA11001C0, I06PA11009C0, I06PA21113C0, I06PA23019C0, I06PA26003C0, I06PA26015C0, I06PA26017C0, I06PA26019C0, I06PA27030C0, I06PA40303C0, I06TS01806C0, I06PA09602C0 |  |  |  |  | 41.5d | 0d | TESTING & COMMISSIONING [128 h]; Cost |  |  |  |  | I06TS01802C0 | IC | C | 06 | TS | SC | 018 | 02 | BILL 8 | B08 | S2 | 02 | R00 | ACF07 | 018 |  |  |  |  |  |  |  |  |  |  |  |  |  |  |  |
| I06TS01814C0 |  | IC-06 ; Consultant's final de-snag inspection | 0d | 2012-11-28 | 2012-11-28 | I06TS01810C0 |  |  |  |  | 41.5d | 15.5d | Cost |  |  |  |  | I06TS01803C0 | IC | C | 06 | TS | SC | 018 | 03 | BILL 8 | B08 | S2 | 03 | R00 | ACF07 | 018 |  |  |  |  |  |  |  |  |  |  |  |  |  |  |  |
|  | 06 | **TR Room** |  | 2011-05-15 | 2012-09-04 |  |  |  |  |  |  |  |  |  |  |  |  |  |  |  |  |  |  |  |  |  |  |  |  |  |  |  |  |  |  |  |  |  |  |  |  |  |  |  |  |  |  |
| I06TR09201C0 |  | IC-06 ; Metal Studs (TR RM) | 6d | 2011-05-15 A | 2011-07-31 A | I06PA09201C0 SS | 100% |  | 2011-07-14 | 2011-07-20 |  |  | PARTITIONS [318 h]; PARTITIONS - Metal Studs [29 m]; Cost |  |  | 313 | 885 | I06TR09201C0 | IC | C | 06 | TR | PT | 092 | 01 | BILL 8 | B08 | S2 | 1F | R00 | ACF06 | 092 |  | GP | 30 | 11060.37 | PMS |  |  |  |  |  |  |  |  |  |  |
| I06TR09203C0 |  | IC-06 ; Partitions 1st face (TR RM) | 45d | 2011-07-10 A | 2011-11-20 | I06TR09201C0 | 50% | 22.5d | 2011-07-06 | 2011-08-28 | 75d | 48.75d | PARTITIONS [29 m]; PARTITIONS [242 h]; Cost |  |  | 314 | 886 | I06TR09203C0 | IC | C | 06 | TR | PT | 092 | 03 | BILL 8 | B08 | S2 | 2F | R00 | ACF06 | 092 |  | GP |  |  | P1F | 0 | 0 | 0 | 0 | 50 |  |  |  |  |  |
| I06TR26009C0 |  | IC-06 ; 2nd Fix, Inst of Equipment (DB, TR, SG,BUS) (TR RM) | 36d | 2011-09-05 A | 2012-03-29 | I06TR09205C0 | 20% | 28.8d | 2012-02-06 | 2012-03-18 | 55.45d | 0d | ELECTRICAL [6981.6 h]; Cost [1588669 AED] | 1,588,669.12 | 317,733.82 |  |  | I06TR26009C0 | IC | C | 06 | TR | ME | 260 | 09 | BILL 8 | B08 | S2 | 2F | R00 | ACF04 | 260 | 2n | MEP |  |  |  |  |  |  |  |  | E |  |  |  |  |
| I06TR26026C0 |  | IC-06 ; 2nd Fix, Conduit (TR RM) | 36d | 2011-10-22 | 2011-12-07 | I06TR09201C0 |  |  |  |  | 61.5d | 0d | ELECTRICAL [397.2 h]; Cost |  |  |  |  | I06TR26026C0 | IC | C | 06 | TR | ME | 260 | 26 | BILL 8 | B08 | S2 | 2F | R00 | ACF07 | 260 | 2n | MEP |  |  |  |  |  |  |  |  |  | 50 | zero |  |  |
| I06TR08101C0 |  | IC-06 ; Door Frames (TR RM) | 18d | 2011-11-01 | 2011-11-24 | I06TR09201C0, GNHE08101C0 FS+69d |  |  |  |  | 100.5d | 74.25d | ASSORTED DOORS [16 h]; Cost |  |  | 316 | 20001090 | I06TR08101C0 | IC | C | 06 | TR | DO | 081 | 01 | BILL 8 | B08 | S2 | DF | R00 | ACF06 | 081 |  |  |  |  |  |  |  |  |  |  |  |  |  | 08 |  |
| I06TR01005C0 |  | IC-06 ; 2nd, Wall Inspection by Consultant (TR RM) | 0d | 2011-12-08 | 2011-12-08 | I06TR26026C0 |  |  |  |  | 61.5d | 35.25d | Cost |  |  |  |  | I06TR01005C0 | IC | C | 06 | TR | ME | 010 | 05 | BILL 8 | B08 | S2 | WI | R00 | ACF07 | 010 | 2n | MEP |  |  |  |  |  |  |  |  |  |  |  |  |  |
| I06TR09205C0 |  | IC-06 ; Partitions Closing (TR RM) | 30d | 2012-01-19 | 2012-02-25 | I06TR01005C0, I06TR09201C0, I06TR09203C0, IAFOA09210C1 FF, I06TR08101C0 FF, I06PA09205C0 SS |  |  |  |  | 26.25d | 0d | PARTITIONS [29 m]; PARTITIONS [307 h]; Cost |  |  | 315 | 887 | I06TR09205C0 | IC | C | 06 | TR | PT | 092 | 05 | BILL 8 | B08 | S2 | FF | R00 | ACF06 | 092 |  | GP |  |  | P2F |  |  |  |  |  |  |  |  |  |  |
| I06TR09901C0 |  | IC-06 ; Wall Prime & 1st coat (TR RM) | 18d | 2012-02-25 | 2012-03-17 | I06TR09205C0 |  |  |  |  | 26.25d | 0d | WALL PAINT [58 h]; WALL PAINT [71 m2]; Cost |  |  | 360 | 20001110 | I06TR09901C0 | IC | C | 06 | TR | PA | 099 | 01 | BILL 8 | B08 | S2 | 01 | R00 | ACF06 | 099 |  |  |  |  |  |  |  |  |  |  |  |  |  |  |  |
| I06TR23009C0 |  | IC-06 ; 2nd Fix, Inst of VAV'S CHW connection (TR RM) | 36d | 2012-02-25 | 2012-04-07 | I06TR09205C0 |  |  |  |  | 42.25d | 0d | MECHANICAL [901.2 h]; Cost |  |  |  |  | I06TR23009C0 | IC | C | 06 | TR | ME | 230 | 09 | BILL 8 | B08 | S2 | 2F | R00 | ACF07 | 230 | 2n | MEP |  |  |  |  |  |  |  |  |  | 25 | zero |  |  |
| I06TR23011C0 |  | IC-06 ; 2nd Fix, Inst of VCD's/FD's (TR RM) | 36d | 2012-02-25 | 2012-04-07 | I06TR09205C0 |  |  |  |  | 42.25d | 0d | MECHANICAL [910.8 h]; Cost |  |  |  |  | I06TR23011C0 | IC | C | 06 | TR | ME | 230 | 11 | BILL 8 | B08 | S2 | 2F | R00 | ACF07 | 230 | 2n | MEP |  |  |  |  |  |  |  |  |  | 15 | zero |  |  |
| I06TR26007C0 |  | IC-06 ; 2nd Fix, Cable Pulling (TR RM) | 36d | 2012-02-25 | 2012-04-07 | I06TR09203C0, I06TR09205C0 |  |  |  |  | 78.25d | 48d | ELECTRICAL [2858.4 h]; Cost |  |  |  |  | I06TR26007C0 | IC | C | 06 | TR | ME | 260 | 07 | BILL 8 | B08 | S2 | 2F | R00 | ACF07 | 260 | 2n | MEP |  |  |  |  |  |  |  |  |  | 25 | zero |  |  |
| I06TR26027C0 |  | IC-06 ; 2nd Fix, Wiring / Cabling (TR RM) | 36d | 2012-02-25 | 2012-04-07 | I06TR09205C0 |  |  |  |  | 78.25d | 52d | ELECTRICAL [213.6 h]; Cost |  |  | 417 | 1318 | I06TR26027C0 | IC | C | 06 | TR | ME | 260 | 27 | BILL 8 | B08 | S2 | 2F | R00 | ACF07 | 260 | 2n | MEP |  |  |  |  |  |  |  |  |  | 25 | zero |  |  |
| I06TR09501C0 |  | IC-06 ; Ceiling Grid and Service Tile (TR RM) | 24d | 2012-03-17 | 2012-04-14 | I06TR09205C0, I06TR09901C0 |  |  |  |  | 26.25d | 0d | CEILING GRID FOR GYPSUM [165.58 h]; CEILING GRID FOR GYPSUM [14.22 m2]; Cost |  |  | 336 | 1327 | I06TR09501C0 | IC | C | 06 | TR | CE | 095 | 01 | BILL 8 | B08 | S2 | 01 | R00 | ACF06 | 095 |  |  |  |  |  |  |  |  |  |  |  |  |  |  | 1 |
| I06TR09903C0 |  | IC-06 ; Wall - Final Paint (TR RM) | 12d | 2012-03-17 | 2012-03-31 | I06TR09901C0 |  |  |  |  | 126.75d | 100.5d | WALL PAINT [31 h]; WALL PAINT [38 m2]; Cost |  |  | 361 | 1312 | I06TR09903C0 | IC | C | 06 | TR | PA | 099 | 03 | BILL 8 | B08 | S2 | 02 | R00 | ACF06 | 099 |  |  |  |  |  |  |  |  |  |  |  |  |  |  |  |
| I06TR26013C0 |  | IC-06 ; Final Fix, Termination & Gladding of Cables (TR RM) | 30d | 2012-03-29 | 2012-05-03 | I06TR26009C0 |  |  |  |  | 55.45d | 25.2d | ELECTRICAL [158.4 h]; Cost |  |  |  |  | I06TR26013C0 | IC | C | 06 | TR | ME | 260 | 13 | BILL 8 | B08 | S2 | FF | R00 | ACF07 | 260 | FF | MEP |  |  |  |  |  |  |  |  |  |  |  |  |  |
| I06TR23013C0 |  | IC-06 ; 2nd Fix, Insulation of CHW pipe & Duct (TR RM) | 36d | 2012-04-07 | 2012-05-19 | I06TR23009C0, I06TR23011C0 |  |  |  |  | 42.25d | 12d | MECHANICAL [3075.6 h]; Cost |  |  |  |  | I06TR23013C0 | IC | C | 06 | TR | ME | 230 | 13 | BILL 8 | B08 | S2 | 2F | R00 | ACF07 | 230 | 2n | MEP |  |  |  |  |  |  |  |  |  | 25 | zero |  |  |
| I06TR09601C0 |  | IC-06 ; Flooring (Rubber, etc) (TR RM) | 28d | 2012-04-14 | 2012-05-16 | I06TR09205C0, I06TR09501C0 |  |  |  |  | 26.25d | 0d | RUBBER FLOOR [3375 m2]; RUBBER FLOOR [1352 h]; Cost |  |  | 359 | 20001120 | I06TR09601C0 | IC | C | 06 | TR | FF | 096 | 01 | BILL 8 | B08 | S2 | 03 | R00 | ACF06 | RF |  |  |  |  |  |  |  |  |  |  |  |  |  |  |  |
| I06TR09905C0 |  | IC-06 ; Ceiling Prime & 1st coat (TR RM) | 0d | 2012-04-14 | 2012-04-14 | I06TR09501C0 |  |  |  |  | 114.75d | 60d | Cost |  |  | 362 | 1313 | I06TR09905C0 | IC | C | 06 | TR | PA | 099 | 05 | BILL 8 | B08 | S2 | 01 | R00 | ACF06 | 099 |  |  |  |  |  |  |  |  |  |  |  |  |  |  |  |
| I06TR23003C0 |  | IC-06 ; Final Fix, Inst of Grilles & Diffusers (TR RM) | 30d | 2012-04-14 | 2012-05-19 | I06TR09501C0 |  |  |  |  | 42.25d | 12d | MECHANICAL [757.2 h]; Cost |  |  |  |  | I06TR23003C0 | IC | C | 06 | TR | ME | 230 | 03 | BILL 8 | B08 | S2 | FF | R00 | ACF07 | 230 | FF | MEP |  |  |  |  |  |  |  |  |  |  |  |  |  |
| I06TR23023C0 |  | IC-06 ; 2nd Fix, Flexible ducts (TR RM) | 36d | 2012-04-14 | 2012-05-26 | I06TR09205C0, I06TR09501C0 |  |  |  |  | 36.25d | 10d | MECHANICAL [72 h]; Cost |  |  | 412 | 20001140 | I06TR23023C0 | IC | C | 06 | TR | ME | 230 | 23 | BILL 8 | B08 | S2 | 2F | R00 | ACF07 | 230 | 2n | MEP |  |  |  |  |  |  |  |  |  |  |  |  |  |
| I06TR23074C0 |  | IC-06 ; Final Fix, Grilles, panels & diffusers (TR RM) | 30d | 2012-04-14 | 2012-05-19 | I06TR09501C0 |  |  |  |  | 42.25d | 12d | MECHANICAL [757.2 h]; Cost |  |  | 419 | 20001160 | I06TR23074C0 | IC | C | 06 | TR | ME | 230 | 74 | BILL 8 | B08 | S2 | FF | R00 | ACF07 | 230 | FF | MEP |  |  |  |  |  |  |  |  |  |  |  |  |  |
| I06TR26005C0 |  | IC-06 ; 2nd Fix, Wiring for Power/Lighting/Emergency (TR RM) | 36d | 2012-04-14 | 2012-05-26 | I06TR26026C0, I06TR09501C0 |  |  |  |  | 36.25d | 10d | ELECTRICAL [213.6 h]; Cost |  |  |  |  | I06TR26005C0 | IC | C | 06 | TR | ME | 260 | 05 | BILL 8 | B08 | S2 | 2F | R00 | ACF07 | 260 | 2n | MEP |  |  |  |  |  |  |  |  |  | 25 | zero |  |  |
| I06TR26015C0 |  | IC-06 ; Final Fix, Inst of Ceiling rose (TR RM) | 30d | 2012-04-14 | 2012-05-19 | I06TR09501C0 |  |  |  |  | 42.25d | 0d | ELECTRICAL [33.6 h]; Cost |  |  |  |  | I06TR26015C0 | IC | C | 06 | TR | ME | 260 | 15 | BILL 8 | B08 | S2 | FF | R00 | ACF07 | 260 | FF | MEP |  |  |  |  |  |  |  |  |  |  |  |  |  |
| I06TR26076C0 |  | IC-06 ; Final Fix, Lighting fittings (TR RM) | 42d | 2012-04-14 | 2012-06-02 | I06TR09501C0 |  |  |  |  | 30.25d | 0d | ELECTRICAL [9577.2 h]; Cost |  |  | 420 | 20001170 | I06TR26076C0 | IC | C | 06 | TR | ME | 260 | 76 | BILL 8 | B08 | S2 | FF | R00 | ACF07 | 260 | FF | MEP |  |  |  |  |  |  |  |  |  |  |  |  |  |
| I06TR27002C0 |  | IC-06 ; 2nd Fix, Dressing of ELV panels (TR RM) | 36d | 2012-04-14 | 2012-05-26 | I06TR09205C0, I06TR27020C0 SS |  |  |  |  | 30.25d | 0d | ELECTRICAL [216 h]; Cost |  |  |  |  | I06TR27002C0 | IC | C | 06 | TR | ME | 270 | 02 | BILL 8 | B08 | S2 | 2F | R00 | ACF07 | 270 | 2n | MEP |  |  |  |  |  |  |  |  |  |  |  |  |  |
| I06TR27020C0 |  | IC-06 ; 2nd Fix, Inst of ELV Equipment (Panels) (TR RM) | 42d | 2012-04-14 | 2012-06-02 | I06TR09205C0, I06TR09501C0 |  |  |  |  | 30.25d | 0d | ELECTRICAL [1041.6 h]; Cost |  |  |  |  | I06TR27020C0 | IC | C | 06 | TR | ME | 270 | 20 | BILL 8 | B08 | S2 | 2F | R00 | ACF04 | 270 | 2n | MEP |  |  |  |  |  |  |  |  | E |  |  |  |  |
| I06TR27030C0 |  | IC-06 ; Final Fix, Inst of ELV device (Detector/Speaker) (TR RM) | 42d | 2012-04-14 | 2012-06-02 | I06TR27002C0 SS |  |  |  |  | 30.25d | 0d | ELECTRICAL [1707.6 h]; Cost |  |  |  |  | I06TR27030C0 | IC | C | 06 | TR | ME | 270 | 30 | BILL 8 | B08 | S2 | FF | R00 | ACF07 | 270 | FF | MEP |  |  |  |  |  |  |  |  |  |  |  |  |  |
| I06TR26019C0 |  | IC-06 ; Final Fix, Inst of Light fittings (TR RM) | 24d | 2012-04-21 | 2012-05-19 | I06TR26015C0 SS+6d, I06TR09501C0 |  |  |  |  | 42.25d | 12d | ELECTRICAL [9577.2 h]; Cost |  |  |  |  | I06TR26019C0 | IC | C | 06 | TR | ME | 260 | 19 | BILL 8 | B08 | S2 | FF | R00 | ACF07 | 260 | FF | MEP |  |  |  |  |  |  |  |  |  |  |  |  |  |
| I06TR08105C0 |  | IC-06 ; Doors (TR RM) | 18d | 2012-05-16 | 2012-06-06 | I06TR08101C0, I06TR09501C0, I06TR09601C0, I06TR09901C0 |  |  |  |  | 56.75d | 0d | ASSORTED DOORS [50 h]; ASSORTED DOORS [5 no]; Cost |  |  | 317 | 1325 | I06TR08105C0 | IC | C | 06 | TR | DO | 081 | 05 | BILL 8 | B08 | S2 | DR | R00 | ACF06 | 081 |  |  |  |  |  |  |  |  |  |  |  |  |  | 08 |  |
| I06TR21115C0 |  | IC-06 ; 2nd Fix, Gaseous Fire Suppression (TR RM) | 18d | 2012-05-16 | 2012-06-06 | I06TR09501C0, I06TR09601C0 |  |  |  |  | 26.25d | 0d | MECHANICAL [1850.4 h]; Cost |  |  | 411 | 20001130 | I06TR21115C0 | IC | C | 06 | TR | ME | 211 | 15 | BILL 8 | B08 | S2 | 2F | R00 | ACF07 | 211 | 2n | MEP |  |  |  |  |  |  |  |  |  |  |  |  |  |
| I06TR01006C0 |  | IC-06 ; 2nd, Ceiling Inspection by Consultants (TR RM) | 0d | 2012-06-02 | 2012-06-02 | I06TR23009C0, I06TR23011C0, I06TR23013C0, I06TR26007C0, I06TR09501C0, I06TR27030C0, I06TR26076C0, I06TR26019C0, I06TR26013C0, I06TR23074C0, I06TR23003C0 |  |  |  |  | 30.25d | 4d | Cost |  |  |  |  | I06TR01006C0 | IC | C | 06 | TR | ME | 010 | 06 | BILL 8 | B08 | S2 | CI | R00 | ACF07 | 010 | 2n | MEP |  |  |  |  |  |  |  |  |  |  |  |  |  |
| I06TR08709C0 |  | IC-06 ; Ironmongery (TR RM) | 12d | 2012-06-06 | 2012-06-21 | I06TR08105C0 |  |  |  |  | 56.75d | 30.5d | IRONMONGERY [20 h]; IRONMONGERY [2 no]; Cost |  |  | 322 | 20001100 | I06TR08709C0 | IC | C | 06 | TR | DO | 087 | 09 | BILL 8 | B08 | S2 | IM | R00 | ACF06 | 087 |  |  |  |  |  |  |  |  |  |  |  |  |  | 08 |  |
| I06TR09503C0 |  | IC-06 ; Ceiling closure (TR RM) | 14d | 2012-06-06 | 2012-06-24 | I06TR01006C0, I06TR09501C0, I06TR21115C0, I06TR26005C0, I06TR26007C0, I06TR26026C0, I06TR26027C0, I06TR23023C0 |  |  |  |  | 26.25d | 0d | ASSORTED CEILING FINISH [34.44 h]; CEILING GYPSUM [4.71 h]; ASSORTED CEILING FINISH [56 m2]; CEILING GYPSUM [14 m2]; Cost |  |  | 337 | 20001080 | I06TR09503C0 | IC | C | 06 | TR | CE | 095 | 03 | BILL 8 | B08 | S2 | 02 | R00 | ACF06 | 095 |  |  |  |  |  |  |  |  |  |  |  |  |  |  |  |
| I06TR09907C0 |  | IC-06 ; Ceiling - Final paint (TR RM) | 0d | 2012-06-24 | 2012-06-24 | I06TR09905C0, I06TR09503C0 |  |  |  |  | 54.75d | 28.5d | Cost |  |  | 363 | 1314 | I06TR09907C0 | IC | C | 06 | TR | PA | 099 | 07 | BILL 8 | B08 | S2 | 02 | R00 | ACF06 | 099 |  |  |  |  |  |  |  |  |  |  |  |  |  |  |  |
| I06TR26017C0 |  | IC-06 ; Final Fix, Inst of Switch/Sockets (TR RM) | 12d | 2012-06-24 | 2012-07-08 | I06TR09901C0, I06TR09503C0 |  |  |  |  | 26.25d | 0d | ELECTRICAL [164.4 h]; Cost |  |  |  |  | I06TR26017C0 | IC | C | 06 | TR | ME | 260 | 17 | BILL 8 | B08 | S2 | FF | R00 | ACF07 | 260 | FF | MEP |  |  |  |  |  |  |  |  |  |  |  |  |  |
| I06TR01802C0 |  | IC-06 ; MEP de-snag, FIREM sign-off | 16.5d | 2012-07-08 | 2012-07-26 | I06TR26017C0, I06TR23074C0, I06TR23003C0, I06TR26076C0, I06TR26013C0, I06TR26015C0, I06TR26019C0, I06TR27030C0 |  |  |  |  | 26.25d | 0d | TESTING & COMMISSIONING [510 h]; Cost |  |  |  |  | CP3CO01851C0 | IC | C | 06 | TR | SC | 018 | 53 | BILL 8 | B08 | S2 | 01 | R00 | ACF07 | 018 |  |  |  |  |  |  |  |  |  |  |  |  |  |  |  |
| I06TR01801C0 |  | IC-06 ; Touch-up & Clean / JV inspection /CIR /De-snag | 20d | 2012-07-26 | 2012-08-21 | I06TR01802C0, I06TR08709C0, I06TR09601C0, I06TR09903C0, I06TR09907C0, I06TR09503C0 |  |  |  |  | 26.25d | 0d | TESTING & COMMISSIONING [128 h]; Cost |  |  | 396 |  | I06TR01851C0 | IC | C | 06 | TR | SC | 018 | 51 | BILL 8 | B08 | S2 | 02 | R00 | ACF07 | 018 |  |  |  |  |  |  |  |  |  |  |  |  |  |  |  |
| I06TR01803C0 |  | IC-06 ; Consultant's final de-snag inspection | 12d | 2012-08-21 | 2012-09-04 | I06TR01801C0 |  |  |  |  | 26.25d | 12.25d | Labor General [1 h]; Cost |  |  |  |  | CP3TS01803C0 | IC | C | 06 | TR | SC | 018 | 03 | BILL 8 | B08 | S1 | 03 | R00 | ACF07 | 018 |  |  |  |  |  |  |  |  |  |  |  |  |  |  |  |

| ID | WBS | Activity | Type | Duration | Start | Finish | Predecessors | Complete | Remaining | Planned start | Planned finish | Total float | Free float | Resources | Cost | Actual cost | change id | RENZ % COMPLETE | CCAD BUILDING(SET) | CCAD PHASE(SET) | CCAD FLOOR(SET) | CCAD ZONE(SET) | CCAD WORK(SET) | CCAD SECTION(SET) | CCAD SERIAL No.(SET) | CCAD CBS(SET) | CCAD BILL(SET) | CCAD HANDOVER(SET) | CCAD TAG(SET) | CCAD REV(SET) | CCADACF (SET) | CCAD SSCF | Phase | Area/ Department | Grids | Are | Weight & Nos | Process | Levels | CCAD CSA | Actual Cost | Claimed This Month | P_811 | P_711 | user_number8 | user_integer1 | user_integer2 | user_number7 | U% | Change Order # | NEW ACTIVITY ID | Act Selector % | CCAD SUB ZONE MEP(SET) | July2011 Target% Complete | N_% | FILTER | CCAD DIVISION(SET) | CCAD MEQ |
| --- | --- | --- | --- | --- | --- | --- | --- | --- | --- | --- | --- | --- | --- | --- | --- | --- | --- | --- | --- | --- | --- | --- | --- | --- | --- | --- | --- | --- | --- | --- | --- | --- | --- | --- | --- | --- | --- | --- | --- | --- | --- | --- | --- | --- | --- | --- | --- | --- | --- | --- | --- | --- | --- | --- | --- | --- | --- | --- |
|  | 07 | **Level 7** |  |  | 2010-11-25 | 2012-12-24 |  |  |  |  |  |  |  |  |  |  |  |  |  |  |  |  |  |  |  |  |  |  |  |  |  |  |  |  |  |  |  |  |  |  |  |  |  |  |  |  |  |  |  |  |  |  |  |  |  |  |  |  |
|  | 01 | **Structure & Envelopment** |  |  | 2010-11-25 | 2012-05-05 |  |  |  |  |  |  |  |  |  |  |  |  |  |  |  |  |  |  |  |  |  |  |  |  |  |  |  |  |  |  |  |  |  |  |  |  |  |  |  |  |  |  |  |  |  |  |  |  |  |  |  |  |
| I07SB03303C0 |  | IC-07 ; Corewall Concrete (Zone SB) |  | 4d | 2010-11-25 A | 2010-11-30 A | I06SB03303C0 | 100% |  | 2011-01-09 | 2011-01-12 |  |  | CONCRETE [8712 h]; CONCRETE [219 m3]; Cost |  |  | I07SB03303C0 | 100 | IC | C | 07 | SB | CT | 033 | 03 | BILL 8 | B08 | S2 | 04 | R00 | ACF03 | 033 |  |  |  |  |  |  |  |  |  |  |  |  |  |  |  |  |  |  |  |  |  |  |  |  |  |  |
| I07SE03305C0 |  | IC-07 ; Corewall Concrete (Zone SE) |  | 5d | 2010-11-25 A | 2010-11-30 A | I06SE03305C0 | 100% |  | 2011-01-13 | 2011-01-18 |  |  | CONCRETE [2064 h]; CONCRETE [52 m3]; Cost |  |  | I07SE03305C0 | 100 | IC | C | 07 | SE | CT | 033 | 05 | BILL 8 | B08 | S2 | 04 | R00 | ACF03 | 033 |  |  |  |  |  |  |  |  |  |  |  |  |  |  |  |  |  |  |  |  |  |  |  |  |  |  |
| I07S205101C0 |  | IC-07 ; Erection of Structural Steel of 7th Floor (Zone S2) |  | 5.43d | 2010-12-20 A | 2011-05-30 A | I06S205103C0, I07SE03305C0 | 100% |  | 2011-02-19 | 2011-02-24 |  |  | STRUCTURAL STEEL [8495 h]; STRUCTURAL STEEL [311 T(Fe)]; Cost |  |  | I07S205101C0 | 100 | IC | C | 07 | S2 | ST | 051 | 01 | BILL 8 | B08 | S2 | 01 | R00 | ACF03 | 051 | Z2 | IC | 6T | K1 | A8A | EREC | 6FLR | ST |  |  |  |  |  |  |  |  |  |  |  |  |  |  |  |  |  |  |
| I07S105101C0 |  | IC-07 ; Erection of Structural Steel of 7th Floor (Zone S1) |  | 5d | 2010-12-22 A | 2011-03-26 A | I06S105103C0, I07SB03303C0 | 100% |  | 2011-01-18 | 2011-01-24 |  |  | STRUCTURAL STEEL [9494 h]; STRUCTURAL STEEL [347 T(Fe)]; Cost |  |  | I07S105101C0 | 100 | IC | C | 07 | S1 | ST | 051 | 01 | BILL 8 | B08 | S2 | 01 | R00 | ACF03 | 051 | Z2 | IC | 6T | K1 | A8A | EREC | 6FLR | ST | 1957343.25 |  |  |  |  |  |  |  |  |  |  |  |  |  |  |  |  |  |
| I07S205103C0 |  | IC-07 ; Alignment & welding of 7th Floor (Zone S2) |  | 10d | 2011-01-05 A | 2011-05-30 A | I07S205101C0 | 100% |  | 2011-02-26 | 2011-03-09 |  |  | STRUCTURAL STEEL [1101 h]; Cost |  |  | I07S205103C0 | 100 | IC | C | 07 | S2 | ST | 051 | 03 | BILL 8 | B08 | S2 | 02 | R00 | ACF03 | 051 | Z2 | IC | 6T | K1 | A8A | EREC | 6FLR | ST |  |  |  |  |  |  |  |  |  |  |  |  |  |  |  |  |  |  |
| I07S105103C0 |  | IC-07 ; Alignment & welding of 7th Floor (Zone S1) |  | 5d | 2011-01-06 A | 2011-03-31 A | I07S105101C0 SS+4d | 100% |  | 2011-01-23 | 2011-01-29 |  |  | STRUCTURAL STEEL [522 h]; Cost |  |  | I07S105103C0 | 100 | IC | C | 07 | S1 | ST | 051 | 03 | BILL 8 | B08 | S2 | 02 | R00 | ACF03 | 051 | Z2 | IC | 6T | K1 | A8A | EREC | 6FLR | ST |  |  |  |  |  |  |  |  |  |  |  |  |  |  |  |  |  |  |
| I07S105305C0 |  | IC-07 ; Metal Decking Lvl- 7 (Zone S1) |  | 15d | 2011-04-18 A | 2011-04-24 A | I07S105103C0, I08S105101C0 | 100% |  | 2011-03-03 | 2011-03-21 |  |  | METAL DECKING [1095 h]; METAL DECKING [1386 m2]; Cost |  |  | I07S105305C0 | 100 | IC | C | 07 | S1 | ST | 053 | 05 | BILL 8 | B08 | S2 | 03 | R00 | ACF03 | 053 | Z2 | IC | 6T | K1 | A8A | MDEC | 6FLR | ST |  |  |  |  |  |  |  |  |  |  |  |  |  |  |  |  |  |  |
| I07S205305C0 |  | IC-07 ; Metal Decking Lvl - 7 (Zone S2) |  | 15d | 2011-04-18 A | 2011-05-30 A | I07S205103C0, I08S205101C0 | 100% |  | 2011-03-27 | 2011-04-13 |  |  | METAL DECKING [2264 h]; METAL DECKING [2866 m2]; Cost |  |  | I07S205305C0 | 100 | IC | C | 07 | S2 | ST | 053 | 05 | BILL 8 | B08 | S2 | 03 | R00 | ACF03 | 053 | Z2 | IC | 6T | K1 | A8A | MDEC | 6FLR | ST |  |  |  |  |  |  |  |  |  |  |  |  |  |  |  |  |  |  |
| I07S203399C0 |  | IC-07 ; Concrete on Metal Decking Lvl - 7 (Zone S2) |  | 10d | 2011-04-24 A | 2011-05-30 A | I07S205305C0 | 100% |  | 2011-04-13 | 2011-04-25 |  |  | CONCRETE [13320 h]; CONCRETE [335 m3]; Cost |  |  | I07S205335C0 | 100 | IC | C | 07 | S2 | CT | 033 | 99 | BILL 8 | B08 | S2 | 08 | R00 | ACF03 | 033 | Z2 | IC | 6T | K1 | A8A | MDEC | 6FLR |  |  |  |  |  |  |  |  |  |  |  |  |  |  |  |  |  |  |  |
| I07S103399C0 |  | IC-07 ; Concrete on Metal Decking Lvl- 7 (Zone S1) |  | 10d | 2011-04-25 A | 2011-05-30 A | I07S105305C0 | 100% |  | 2011-03-20 | 2011-03-31 |  |  | CONCRETE [13320 h]; CONCRETE [335 m3]; Cost |  |  | I07S105335C0 | 100 | IC | C | 07 | S1 | CT | 033 | 99 | BILL 8 | B08 | S2 | 08 | R00 | ACF03 | 033 | Z2 | IC | 6T | K1 | A8A | MDEC | 6FLR |  |  |  |  |  |  |  |  |  |  |  |  |  |  |  |  |  |  |  |
| I07S107807C0 |  | IC-07 ; Cementitious Fire proofing at Lvl 7 (Zone S1) |  | 9.88d | 2011-05-15 A | 2011-06-26 A | I08S103399C0 | 100% |  | 2011-06-06 | 2011-06-16 |  |  | CEMENTITIOUS FIREPROOFING [1081 h]; CEMENTITIOUS FIREPROOFING [2161 m2]; Cost |  |  | I07S107807C0 | 98 | IC | C | 07 | S1 | ST | 078 | 07 | BILL 8 | B08 | S2 | 04 | R00 | ACF03 | 078 | Z2 | IC | 6T | K1 | A8A | FIRE | 6FLR | ST |  | 3780.34 |  |  |  |  |  |  |  |  |  |  |  |  |  |  |  |  |
| I07S207807C0 |  | IC-07 ; Cementitious Fire proofing at Lvl 7 (Zone S2) |  | 13d | 2011-05-15 A | 2011-06-26 A | I08S203399C0 | 100% |  | 2011-06-18 | 2011-07-04 |  |  | CEMENTITIOUS FIREPROOFING [2234 h]; CEMENTITIOUS FIREPROOFING [4467 m2]; Cost |  |  | I07S207807C0 | 95 | IC | C | 07 | S2 | ST | 078 | 07 | BILL 8 | B08 | S2 | 04 | R00 | ACF03 | 078 | Z2 | IC | 6T | K1 | A8A | FIRE | 6FLR | ST |  | 19539.51 |  |  |  |  |  |  |  |  |  |  |  |  |  |  |  |  |
| I07GN02503C0 |  | IC-07 ; Temporary Enclosure | level of effort | 92.3d | 2011-06-01 A | 2012-04-14 | I07SL09203C0 SS, I07P109203C0 SS, I07TR09203C0 SS, I07P209203C0 SS, I07PA09203C0 SS |  | 161.5d | 2011-06-01 | 2011-09-20 | 108.75d | 0d | Labor General [41.5 h]; Cost |  |  |  |  | IC | C | 07 | GEN | FA | GEN |  |  | B08 |  | TE | R00 | ACF05 | 010 |  |  |  |  |  |  |  | FA |  |  | 100 | 33.69 |  |  |  |  |  |  |  |  |  |  |  |  |  |  |
| I07CO04403C0 |  | IC-07 ; C2 Bracket (Common Zone) |  | 90d | 2011-07-10 A | 2011-10-10 | I07S107807C0, I07S207807C0 FF, I08CO04403C0 SS | 90% | 9d | 2011-06-30 | 2011-10-16 | 18.7d | 0d | FACADE CURTAIN WALL 2 [383 h]; Cost |  |  | I07CO04403C0 |  | IC | C | 07 | CO | FA | 044 | 03 | BILL 8 | B08 | S2 | FC2 | R00 | ACF05 | 044 |  |  |  |  |  |  |  | FA |  |  | 70 | 20 | 0 | 0 | 0 | 0 | 90 |  |  |  |  |  |  |  |  |  |
| I07CO04405C0 |  | IC-07 ; C2 Glazing (Common Zone) |  | 90d | 2011-08-10 A | 2011-10-20 | I07CO04406C0 SS, I07GN02503C0 FF, I07CO04406C0 FF, I06CO04409C0 SS, I06CO04409C0 FF | 80% | 18d | 2011-08-22 | 2011-12-13 | 38.6d | 0d | FACADE CURTAIN WALL 2 [3776.2 h]; FACADE CURTAIN WALL 2 [1073.33 m2]; FACADE TOTAL QUANTITY m2 [1073.33 m2]; Cost |  |  | I07CO04405C0 |  | IC | C | 07 | CO | FA | 044 | 05 | BILL 8 | B08 | S2 | FC2 | R00 | ACF05 | 044 |  |  |  |  |  |  |  | FA |  |  | 50 | 0 | 0 | 0 | 0 | 0 | 80 |  |  |  |  |  |  |  |  |  |
| I07CO04406C0 |  | IC-07 ; C2 Transom & Mullion (Common Zone) |  | 90d | 2011-08-10 A | 2011-10-20 | I07CO04403C0 SS | 80% | 18d | 2011-08-22 | 2011-12-13 | 38.6d | 0d | FACADE CURTAIN WALL 2 [1530.6 h]; Cost |  |  | I07CO04406C0 |  | IC | C | 07 | CO | FA | 044 | 06 | BILL 8 | B08 | S2 | FC2 | R00 | ACF05 | 044 |  |  |  |  |  |  |  | FA |  |  | 50 | 0 | 0 | 0 | 0 | 0 | 80 |  |  |  |  |  |  |  |  |  |
| I07CO04415C0 |  | IC-07 ; SG Catwalk Installation (Common Zone) |  | 89d | 2011-10-22 | 2012-02-09 | IEXCO04403C0 SS, I06CO04415C0 SS |  |  |  |  | 123d | 0d | Labor General [5436.3 h]; Cost |  |  | I05CO04411C0 |  | IC | C | 07 | CO | FA | 044 | 11 | BILL 9 | B08 | S2 | SG | R00 | ACF05 | 044 |  |  |  |  |  |  |  | FA |  |  |  |  |  |  |  |  |  |  |  |  |  |  |  |  |  |  |
| I07SE05509C0 |  | IC-07 ; Steel Staircase & welding/bolting (Stair F5 & 6) (Zone SE) |  | 6d | 2011-11-09 | 2011-11-16 | I06SE05509C0, I07SE03305C0 |  |  |  |  | 127.31d | 0d | STRUCTURAL STEEL [7 T(Fe)]; STRUCTURAL STEEL [91 h]; Cost |  |  | IP3SE03305C0 |  | IC | C | 07 | SE | SW | 055 | 05 | BILL 8 | B08 | S2 | 01 | R00 | ACF03 | 055 |  |  |  |  |  |  |  | ST |  |  |  |  |  |  |  |  |  |  |  |  |  |  |  |  |  |  |
| I07CO04401C0 |  | IC-07 ; S1 Ex. partitions (Common Zone) |  | 26d | 2012-03-14 | 2012-04-14 | I06CO04401C0 SS+6d, I07GN02503C0 FF, AAFCI04401R02 FS+148d |  |  |  |  | 108.75d | 0d | PARTITIONS [974 m]; FACADE STONE PANEL 1 [251.3 h]; Cost |  |  | CP2CO04401C0 |  | IC | C | 07 | CO | FA | 044 | 01 | BILL 8 | B08 | S1 | FS1 | R00 | ACF05 | 044 |  |  |  |  |  |  |  | FA |  |  |  |  |  |  |  |  |  | 164 | 87 |  |  |  |  |  |  |  |
| I07CO04402C0 |  | IC-07 ; S1 onyx stone facade (Common Zone) |  | 18.03d | 2012-04-14 | 2012-05-05 | I07CO04401C0, AAFCI04401R02 FS+148d |  |  |  |  | 195.47d | 170.9d | FACADE TOTAL QUANTITY m2 [283 m2]; FACADE METAL PANEL 2 [283 m2]; FACADE STONE PANEL 1 [1172.6 h]; Cost |  |  | CP2CO04411C0 |  | IC | C | 07 | CO | FA | 044 | 11 | BILL 8 | B08 | S1 | FS1 | R00 | ACF05 | 044 |  |  |  |  |  |  |  | FA |  |  |  |  |  |  |  |  |  | 167 | 90 |  |  |  |  |  |  |  |
| I07CO04455C0 |  | IC-07 ; S1 Inner Side of External Partition (Common Zone) |  | 12d | 2012-04-14 | 2012-04-28 | I07CO04401C0, I07PA09205C0 SS, AAFCI04401R02 FS+148d |  |  |  |  | 159.5d | 138.5d | FACADE STONE PANEL 1 [251.3 h]; Cost |  |  | DP3CO04415C0 |  | IC | C | 07 | CO | FA | 044 | 15 | BILL 5 | B08 | S1 | FS1 | R00 | ACF05 | 044 |  |  |  |  |  |  |  | FA |  |  |  |  |  |  |  |  |  |  |  |  |  |  |  |  |  |  |
|  | 02 | **Slp Suite, On-CallL Suite, Conf, Lng** |  |  | 2011-05-15 | 2012-12-23 |  |  |  |  |  |  |  |  |  |  |  |  |  |  |  |  |  |  |  |  |  |  |  |  |  |  |  |  |  |  |  |  |  |  |  |  |  |  |  |  |  |  |  |  |  |  |  |  |  |  |  |  |
| I07SL09201C0 |  | IC-07 ; Metal Studs (Slp Suite) |  | 75d | 2011-05-15 A | 2011-10-20 | I07SL23001C0 SS, I07CO04406C0 FF, I07CO04405C0 FF | 80% | 15d | 2011-08-16 | 2011-11-17 | 38.6d | 0d | PARTITIONS [2483 h]; PARTITIONS - Metal Studs [256 m]; Cost |  |  | I07SL09201C0 | 5 | IC | C | 07 | SL | PT | 092 | 01 | BILL 8 | B08 | S2 | 1F | R00 | ACF06 | 092 |  |  |  |  |  |  |  | GP |  | 89967.35 |  |  | 0 | 0 | 0 | 0 | 80 | 313 | 944 | PMS |  |  |  |  |  |  |
| I07SL23001C0 |  | IC-07 ; 1st Fix, Inst. of Supports for MEP (Slp Suite) |  | 24d | 2011-05-19 A | 2011-05-29 A | I07S107807C0, I07S207807C0 | 100% |  | 2011-07-05 | 2011-08-02 |  |  | MECHANICAL [577.2 h]; Cost [32540.2 AED] | 32,540.18 | 32,540.18 | I07SL23001C0 | 100 | IC | C | 07 | SL | ME | 230 | 01 | BILL 8 | B08 | S2 | 1F | R00 | ACF04 | 230 |  |  |  |  |  |  |  | MEP |  |  |  |  |  |  |  |  |  |  |  | M1F | 1S |  |  |  |  |  |
| I07SL26001C0 |  | IC-07 ; 1st Fix, Inst of Trunking/Conduiting (Slp Suite) |  | 84d | 2011-06-01 A | 2011-11-16 | I07S107807C0, I07S207807C0, I07SL23001C0 | 55% | 37.8d | 2011-06-01 | 2011-09-11 | 65.6d | 0d | ELECTRICAL [397.2 h]; Cost [20466.7 AED] | 20,466.68 | 11,256.67 | I07SL26001C0 |  | IC | C | 07 | SL | ME | 260 | 01 | BILL 8 | B08 | S2 | 1F | R00 | ACF04 | 260 |  |  |  |  |  |  |  | MEP |  | 7127.02 | 35 | 10 | 0 | 0 | 0 | 0 |  |  |  | M1F | 1S | 20 | 10 |  |  |  |
| I07SL22019C0 |  | IC-07 ; 1st Fix, Inst of Drainage pipe (ceiling) (Slp Suite) |  | 108d | 2011-06-15 A | 2011-11-16 | I07SL23001C0, I07SL26013C0 SS+12d | 65% | 37.8d | 2011-07-17 | 2011-11-27 | 65.6d | 0d | PLUMBING [630 h]; Cost [34080.3 AED] | 34,080.3 | 22,152.2 | I07SL22019C0 |  | IC | C | 07 | SL | ME | 220 | 19 | BILL 8 | B08 | S2 | 1F | R00 | ACF04 | 220 |  |  |  |  |  |  |  | MEP |  | 19753.63 | 60 | 50 | 0 | 0 | 0 | 0 | 65 |  |  | M1F | 1S | 65 | 50 |  |  |  |
| I07SL09203C0 |  | IC-07 ; Partitions 1st face (Slp Suite) |  | 75d | 2011-06-15 A | 2011-11-24 | I07SL09201C0 SS+12d | 45% | 41.25d | 2011-06-15 | 2011-09-14 | 71.75d | 57.75d | PARTITIONS [256 m]; PARTITIONS [1 h]; Cost |  |  | I07SL09203C0 |  | IC | C | 07 | SL | PT | 092 | 03 | BILL 8 | B08 | S2 | 2F | R00 | ACF06 | 092 |  |  |  |  |  |  |  | GP |  | 17993.47 |  |  |  |  |  |  |  | 314 | 945 | P1F |  |  |  |  |  |  |
| I07SL22011C0 |  | IC-07 ; 2nd Fix, Drainage/Water pipe (wall) (Slp Suite) |  | 66d | 2011-06-15 A | 2012-01-05 | I07SL09201C0 | 10% | 59.4d | 2011-06-15 | 2011-09-04 | 38.6d | 0d | PLUMBING [891.6 h]; Cost [34080.3 AED] | 34,080.3 | 3,408.03 | I07SL22011C0 |  | IC | C | 07 | SL | ME | 220 | 11 | BILL 8 | B08 | S2 | 2F | R00 | ACF07 | 220 |  |  |  |  |  |  |  | MEP |  | 11315.07 |  |  |  |  |  |  |  |  |  |  | 2n | 25 | 10 |  |  |  |
| I07SL27010C0 |  | IC-07 ; 1st Fix, Inst of Trunking for ELV system (Slp Suite) |  | 108d | 2011-06-15 A | 2011-10-19 | I07S107807C0, I07S207807C0, I07SL23001C0, I07SL26001C0 SS+12d | 85% | 16.2d | 2011-06-15 | 2011-10-23 | 65.6d | 0d | ELECTRICAL [914.4 h]; Cost [47960 AED] | 47,960.04 | 40,766.03 | I07SL27010C0 |  | IC | C | 07 | SL | ME | 270 | 10 | BILL 8 | B08 | S2 | 1F | R00 | ACF04 | 270 |  |  |  |  |  |  |  | MEP |  | 13911.7 | 65 | 45 | 0 | 0 | 0 | 0 |  |  |  | M1F | 1S | 75 | 45 |  |  |  |
| I07SL26013C0 |  | IC-07 ; 1st Fix, Inst of Cable Tray (Slp Suite) |  | 90d | 2011-06-27 A | 2011-10-20 | I07S107807C0, I07S207807C0, I07SL23001C0, I07SL27010C0 SS+14d | 80% | 18d | 2011-07-03 | 2011-10-18 | 65.6d | 0d | ELECTRICAL [205.2 h]; Cost [11036 AED] | 11,035.96 | 8,828.76 | I07SL26013C0 |  | IC | C | 07 | SL | ME | 260 | 13 | BILL 8 | B08 | S2 | 1F | R00 | ACF04 | 260 |  |  |  |  |  |  |  | MEP |  | 5124 |  |  | 0 | 0 | 0 | 0 |  |  |  | M1F | 1S | 50 | 100 |  |  |  |
| I07SL21111C0 |  | IC-07 ; 1st Fix, Inst of Sprinkler main pipe (Slp Suite) |  | 150d | 2011-06-28 A | 2011-10-26 | I07SL22005C0 SS+14d, I07SL23001C0 | 85% | 22.5d | 2011-08-10 | 2012-02-12 | 66.85d | 0d | MECHANICAL [264 h]; Cost [14398.4 AED] | 14,398.38 | 12,238.62 | I07SL21111C0 |  | IC | C | 07 | SL | ME | 211 | 11 | BILL 8 | B08 | S2 | 1F | R00 | ACF04 | 211 |  |  |  |  |  |  |  | MEP |  | 4178.23 | 85 | 50 | 0 | 0 | 0 | 0 | 85 |  |  | M1F | 1S | 30 | 50 |  |  |  |
| I07SL21117C0 |  | IC-07 ; 1st Fix, Inst of Sprinkler branch pipe (Slp Suite) |  | 108d | 2011-07-10 A | 2011-11-17 | I07SL09201C0, I07SL21111C0 | 85% | 16.2d | 2011-09-10 | 2012-01-21 | 77.3d | 63.3d | MECHANICAL [609.6 h]; Cost [33303.7 AED] | 33,303.68 | 28,308.12 | I07SL21117C0 |  | IC | C | 07 | SL | ME | 211 | 17 | BILL 8 | B08 | S2 | 1F | R00 | ACF04 | 211 |  |  |  |  |  |  |  | MEP |  |  | 75 | 40 | 0 | 0 | 0 | 0 | 85 |  |  | M1F | 1S | 30 | 40 |  |  |  |
| I07SL22005C0 |  | IC-07 ; 1st Fix, Inst of Water supply pipe (ceiling) (Slp Suite) |  | 72d | 2011-07-10 A | 2011-12-04 | I07SL22019C0 SS+7d, I07SL23001C0 | 30% | 50.4d | 2011-07-12 | 2011-10-06 | 65.6d | 0d | PLUMBING [1670.4 h]; Cost [90220.7 AED] | 90,220.67 | 27,066.2 | I07SL22005C0 |  | IC | C | 07 | SL | ME | 220 | 05 | BILL 8 | B08 | S2 | 1F | R00 | ACF04 | 220 |  |  |  |  |  |  |  | MEP |  |  | 20 | 3 | 0 | 0 | 0 | 0 | 30 |  |  | M1F | 1S | 30 | 3 |  |  |  |
| I07SL23017C0 |  | IC-07 ; 1st Fix, Inst of CHW pipe (Slp Suite) |  | 84d | 2011-07-10 A | 2011-12-04 | I07SL21111C0 SS+14d, I07SL23001C0 | 40% | 50.4d | 2011-08-11 | 2011-11-23 | 66.85d | 0d | MECHANICAL [2832 h]; Cost [154640 AED] | 154,640.47 | 61,856.19 | I07SL23017C0 |  | IC | C | 07 | SL | ME | 230 | 17 | BILL 8 | B08 | S2 | 1F | R00 | ACF04 | 230 |  |  |  |  |  |  |  | MEP |  |  | 30 | 20 | 0 | 0 | 0 | 0 | 40 |  |  | M1F | 1S | 25 | 20 |  |  |  |
| I07SL23023C0 |  | IC-07 ; 1st Fix, Inst of Main Ducting (Slp Suite) |  | 90d | 2011-07-10 A | 2011-11-24 | I07SL23001C0, I07SL23017C0 SS+10d | 50% | 45d | 2011-08-23 | 2011-12-14 | 71d | 0d | MECHANICAL [7574.4 h]; Cost [413624 AED] | 413,624.26 | 206,812.13 | I07SL23023C0 |  | IC | C | 07 | SL | ME | 230 | 23 | BILL 8 | B08 | S2 | 1F | R00 | ACF04 | 230 |  |  |  |  |  |  |  | MEP |  |  | 40 | 20 | 0 | 0 | 0 | 0 | 50 |  |  | M1F | 1S | 25 | 20 |  |  |  |
| I07SL23008C0 |  | IC-07 ; 1st Fix, Inst of VCD's/FD's (Slp Suite) |  | 48d | 2011-09-05 A | 2012-01-18 | I07SL23023C0 | 10% | 43.2d | 2011-11-03 | 2012-01-04 | 113.05d | 91.8d | MECHANICAL [910.8 h]; Cost [49161.7 AED] | 49,161.67 | 4,916.17 | I07SL23008C0 |  | IC | C | 07 | SL | ME | 230 | 08 | BILL 8 | B08 | S2 | 1F | R00 | ACF04 | 230 |  |  |  |  |  |  |  | MEP |  |  |  |  |  |  |  |  |  |  |  | M1F | 1S |  |  |  |  |  |
| I07SL26009C0 |  | IC-07 ; 2nd Fix, Inst of Wall conduites (Slp Suite) |  | 48d | 2011-10-22 | 2011-12-21 | I07SL09201C0 |  |  |  |  | 50d | 11.4d | ELECTRICAL [1036.8 h]; Cost |  |  | I07SL26009C0 |  | IC | C | 07 | SL | ME | 260 | 09 | BILL 8 | B08 | S2 | 2F | R00 | ACF07 | 260 |  |  |  |  |  |  |  | MEP |  |  |  |  |  |  |  |  |  |  |  |  | 2n | 20 |  | zero |  |  |
| I07SL27001C0 |  | IC-07 ; 1st Fix, Wiring/ Cabling work (Slp Suite) |  | 48d | 2011-11-16 | 2012-01-15 | I07SL26001C0, I07SL26013C0, I07SL27010C0 |  |  |  |  | 115.45d | 94.2d | ELECTRICAL [213.6 h]; Cost |  |  | I07SL27001C0 |  | IC | C | 07 | SL | ME | 270 | 01 | BILL 8 | B08 | S2 | 1F | R00 | ACF04 | 270 |  |  |  |  |  |  |  | MEP |  |  |  |  |  |  |  |  |  |  |  | M1F | 1S | 25 |  | zero |  |  |
| I07SL23009C0 |  | IC-07 ; 2nd Fix, Inst of VAV'S CHW connection (Slp Suite) |  | 36d | 2011-12-04 | 2012-01-16 | I07SL23017C0 |  |  |  |  | 66.85d | 0d | MECHANICAL [1722 h]; Cost |  |  | I07SL23009C0 |  | IC | C | 07 | SL | ME | 230 | 09 | BILL 8 | B08 | S2 | 2F | R00 | ACF07 | 230 |  |  |  |  |  |  |  | MEP |  |  |  |  |  |  |  |  |  |  |  |  | 2n |  |  |  |  |  |
| I07SL08103C0 |  | IC-07 ; Door Frames (Slp Suite) |  | 36d | 2011-12-26 | 2012-02-07 | I07SL09201C0, GNHE08101C0 FS+69d, I07PA08103C0 SS+3d |  |  |  |  | 59d | 45d | ASSORTED DOORS [155 h]; Cost |  |  | I07SL08103C0 |  | IC | C | 07 | SL | DO | 081 | 03 | BILL 8 | B08 | S2 | DF | R00 | ACF06 | 081 |  |  |  |  |  |  |  |  |  |  |  |  |  |  |  |  |  | 316 | 947 |  |  |  |  |  | 08 |  |
| I07SL01005C0 |  | IC-07 ; 2nd, Wall Inspection by Consultant (Slp Suite) |  | 0d | 2012-01-05 | 2012-01-05 | I07SL22011C0, I07SL26009C0 |  |  |  |  | 38.6d | 24.6d | Cost |  |  | I07SL01005C0 |  | IC | C | 07 | SL | ME | 010 | 05 | BILL 8 | B08 | S2 | WI | R00 | ACF07 | 010 |  |  |  |  |  |  |  | MEP |  |  |  |  |  |  |  |  |  |  |  |  | 2n |  |  |  |  |  |
| I07SL05511C0 |  | IC-07 ; Wall reinforcement for MEP/Medical (Slp Suite) |  | 24d | 2012-01-07 | 2012-02-02 | I07SL09201C0, IAFCI22001R02 FS+65d |  |  |  |  | 14d | 0d | SECONDARY STEEL [47 h]; Cost |  |  | I07SL05511C0 |  | IC | C | 07 | SL | SW | 055 | 11 | BILL 8 | B08 | S2 | 03 | R00 | ACF03 | b |  |  |  |  |  |  |  |  |  |  |  |  |  |  |  |  |  |  |  |  |  |  |  |  |  |  |
| I07SL23015C0 |  | IC-07 ; 2nd Fix, Insulation of CHW pipe & Duct (Slp Suite) |  | 48d | 2012-01-16 | 2012-03-13 | I07SL23009C0, I07SL23017C0, I07SL23023C0 |  |  |  |  | 66.85d | 45.6d | MECHANICAL [3896.4 h]; Cost |  |  | I07SL23015C0 |  | IC | C | 07 | SL | ME | 230 | 15 | BILL 8 | B08 | S2 | 2F | R00 | ACF07 | 230 |  |  |  |  |  |  |  | MEP |  |  |  |  |  |  |  |  |  |  |  |  | 2n |  |  |  |  |  |
| I07SL09205C0 |  | IC-07 ; Partitions Closing (Slp Suite) |  | 48d | 2012-02-05 | 2012-03-31 | I07SL01005C0, I07SL05511C0, I07SL09203C0, I07SL22005C0, I07SL22019C0, IAFOA09210C1 FF, I07SL08103C0 FF, I07SL21117C0, I07SL23023C0 |  |  |  |  | 14d | 0d | PARTITIONS [256 m]; PARTITIONS [2496 h]; Cost |  |  | I07SL09205C0 |  | IC | C | 07 | SL | PT | 092 | 05 | BILL 8 | B08 | S2 | FF | R00 | ACF06 | 092 |  |  |  |  |  |  |  | GP |  |  |  |  |  |  |  |  |  | 315 | 946 | P2F |  |  |  |  |  |  |
| I07SL07103C0 |  | IC-07 ; Waterproofing (Slp Suite) |  | 12d | 2012-04-01 | 2012-04-14 | I07SL08103C0, I07SL09205C0 |  |  |  |  | 107d | 0d | THERMAL & MOISTURE [80 h]; THERMAL & MOISTURE [488 m2]; Cost |  |  | I07SL07103C0 |  | IC | C | 07 | SL | FF | 071 | 03 | BILL 8 | B08 | S2 | 01 | R00 | ACF03 | 071 |  |  |  |  |  |  |  |  |  |  |  |  |  |  |  |  |  | 105 | 999 |  |  |  |  |  |  |  |
| I07SL09901C0 |  | IC-07 ; Wall Prime & 1st coat (Slp Suite) |  | 30d | 2012-04-01 | 2012-05-05 | I07SL09205C0 |  |  |  |  | 21.25d | 0d | WALL PAINT [468 h]; WALL PAINT [583 m2]; Cost |  |  | I07SL09901C0 |  | IC | C | 07 | SL | PA | 099 | 01 | BILL 8 | B08 | S2 | 01 | R00 | ACF06 | 099 |  |  |  |  |  |  |  |  |  |  |  |  |  |  |  |  |  | 328 | 956 |  |  |  |  |  |  |  |
| I07SL26005C0 |  | IC-07 ; 2nd Fix, Wiring for Power/Lighting/Emergency (Slp Suite) |  | 48d | 2012-04-01 | 2012-05-26 | I07SL09205C0 |  |  |  |  | 99.25d | 0d | ELECTRICAL [853.2 h]; Cost |  |  | I07SL26005C0 |  | IC | C | 07 | SL | ME | 260 | 05 | BILL 8 | B08 | S2 | 2F | R00 | ACF07 | 260 |  |  |  |  |  |  |  | MEP |  |  |  |  |  |  |  |  |  |  |  |  | 2n |  |  |  |  |  |
| I07SL26007C0 |  | IC-07 ; 2nd Fix, Cable Pulling (Slp Suite) |  | 54d | 2012-04-01 | 2012-06-02 | I07SL09201C0 SS+6d, I07SL09205C0 |  |  |  |  | 129.25d | 108d | ELECTRICAL [3498 h]; Cost |  |  | I07SL26007C0 |  | IC | C | 07 | SL | ME | 260 | 07 | BILL 8 | B08 | S2 | 2F | R00 | ACF07 | 260 |  |  |  |  |  |  |  | MEP |  |  |  |  |  |  |  |  |  |  |  |  | 2n | 20 |  | zero |  |  |
| I07SL26053C0 |  | IC-07 ; 2nd Fix, Wiring / Cabling (Slp Suite) |  | 48d | 2012-04-01 | 2012-05-26 | I07SL09203C0, I07SL09205C0 |  |  |  |  | 135.25d | 114d | ELECTRICAL [853.2 h]; Cost |  |  | I07SL26053C0 |  | IC | C | 07 | SL | ME | 260 | 53 | BILL 8 | B08 | S2 | 2F | R00 | ACF07 | 260 |  |  |  |  |  |  |  | MEP |  |  |  |  |  |  |  |  |  | 389 | 977 |  | 2n |  |  |  |  |  |
| I07SL27020C0 |  | IC-07 ; 2nd Fix, Inst of ELV Equipment (Panels) (Slp Suite) |  | 60d | 2012-04-01 | 2012-06-09 | I07SL09205C0 |  |  |  |  | 87.25d | 48d | ELECTRICAL [1214.4 h]; Cost |  |  | I07SL27020C0 |  | IC | C | 07 | SL | ME | 270 | 20 | BILL 8 | B08 | S2 | 2F | R00 | ACF04 | 270 |  |  |  |  |  |  |  | MEP |  |  |  |  |  |  |  |  |  |  |  |  | 2n |  |  |  |  | E |
| I07SL09305C0 |  | IC-07 ; Ceramic floor tile (Slp Suite) |  | 22d | 2012-04-15 | 2012-05-09 | I07SL07103C0 |  |  |  |  | 107d | 0d | CERAMIC FLOOR TILES [64 h]; CERAMIC FLOOR TILES [33 m2]; Cost |  |  | I07SL09305C0 |  | IC | C | 07 | SL | FF | 093 | 05 | BILL 8 | B08 | S2 | 02 | R00 | ACF06 | CT |  |  |  |  |  |  |  |  |  |  |  |  |  |  |  |  |  | 106 | 1000 |  |  |  |  |  |  |  |
| I07SL26011C0 |  | IC-07 ; 2nd Fix, Inst of Equipment (DB) (Slp Suite) |  | 66d | 2012-04-19 | 2012-07-05 | I07SL09205C0, I07PA26011C0 SS+3d |  |  |  |  | 42.25d | 0d | ELECTRICAL [1887.6 h]; Cost |  |  | I07SL26011C0 |  | IC | C | 07 | SL | ME | 260 | 11 | BILL 8 | B08 | S2 | 2F | R00 | ACF04 | 260 |  |  |  |  |  |  |  | MEP |  |  |  |  |  |  |  |  |  |  |  |  | 2n |  |  |  |  | E |
| I07SL05501C0 |  | IC-07 ; Handrails & balustrade (Slp Suite) |  | 33.75d | 2012-05-06 | 2012-06-13 | I07SL09901C0 |  |  |  |  | 65.5d | 44.25d | SECONDARY STEEL [264 h]; Cost |  |  | I07SL05501C0 |  | IC | C | 07 | SL | SW | 055 | 01 | BILL 8 | B08 | S2 | 01 | R00 | ACF03 | a |  |  |  |  |  |  |  |  |  |  |  |  |  |  |  |  |  |  |  |  |  |  |  |  |  |  |
| I07SL09501C0 |  | IC-07 ; Ceiling Grid and Service Tile (Slp Suite) |  | 36d | 2012-05-06 | 2012-06-17 | I07SL09205C0, I07SL21117C0, I07SL23008C0, I07SL23009C0, I07SL23015C0, I07SL27001C0, IAFCI22002R02 FS+65d, I07SL09901C0 |  |  |  |  | 21.25d | 0d | CEILING GRID FOR GYPSUM [1504.83 h]; CEILING GRID FOR GYPSUM [128.64 m2]; Cost |  |  | I07SL09501C0 |  | IC | C | 07 | SL | CE | 095 | 01 | BILL 8 | B08 | S2 | 01 | R00 | ACF06 | 095 |  |  |  |  |  |  |  |  |  |  |  |  |  |  |  |  |  | 323 | 952 |  |  |  |  |  |  |  |
| I07SL22025C0 |  | IC-07 ; Final Fix, Inst of Sanitary Ware (Slp Suite) |  | 36d | 2012-05-10 | 2012-06-21 | I07SL09205C0, I07SL09305C0, A10230 FS+148d |  |  |  |  | 107d | 0d | PLUMBING [1315.2 h]; Cost |  |  | I07SL22025C0 |  | IC | C | 07 | SL | ME | 220 | 25 | BILL 8 | B08 | S2 | FF | R00 | ACF07 | 220 |  |  |  |  |  |  |  | MEP |  |  |  |  |  |  |  |  |  |  |  |  | FF |  |  |  |  |  |
| I07SL26015C0 |  | IC-07 ; Final Fix, Termination & Gladding of Cables (Slp Suite) |  | 36d | 2012-05-27 | 2012-07-08 | I07SL26005C0 |  |  |  |  | 99.25d | 42d | ELECTRICAL [158.4 h]; Cost |  |  | I07SL26015C0 |  | IC | C | 07 | SL | ME | 260 | 15 | BILL 8 | B08 | S2 | FF | R00 | ACF07 | 260 |  |  |  |  |  |  |  | MEP |  |  |  |  |  |  |  |  |  |  |  |  | FF |  |  |  |  |  |
| I07SL09202C0 |  | IC-07 ; Vertical folding acoustical screen (Slp Suite) |  | 20d | 2012-06-18 | 2012-07-10 | I07SL09501C0 |  |  |  |  | 139d | 117.75d | PARTITIONS [861 h]; Cost |  |  | I06SL09201C0 |  | IC | C | 07 | SL | FI | 092 | 02 | BILL 8 | B08 | S2 | 02 | R00 | ACF06 | 092 |  |  |  |  |  |  |  | GP |  |  |  |  |  |  |  |  |  | 313 | 944 |  |  |  |  |  |  |  |
| I07SL09601C0 |  | IC-07 ; Flooring (Terrazzo) (Slp Suite) |  | 42d | 2012-06-18 | 2012-08-05 | I07SL09501C0, I07SL05501C0 FF |  |  |  |  | 21.25d | 0d | TERRAZO FLOOR [576 h]; TERRAZO FLOOR [319 m2]; Cost |  |  | I07SL09601C0 |  | IC | C | 07 | SL | FF | 096 | 01 | BILL 8 | B08 | S2 | 07 | R00 | ACF06 | TZ |  |  |  |  |  |  |  |  |  |  |  |  |  |  |  |  |  | 326 | 955 |  |  |  |  |  |  |  |
| I07SL09903C0 |  | IC-07 ; Wall Final Paint (Slp Suite) |  | 30d | 2012-06-18 | 2012-07-22 | I07SL09901C0, I07SL09905C0, I07SL09501C0 |  |  |  |  | 129d | 78d | WALL PAINT [252 h]; WALL PAINT [314 m2]; Cost |  |  | I07SL09903C0 |  | IC | C | 07 | SL | PA | 099 | 03 | BILL 8 | B08 | S2 | 02 | R00 | ACF06 | 099 |  |  |  |  |  |  |  |  |  |  |  |  |  |  |  |  |  | 329 | 957 |  |  |  |  |  |  |  |
| I07SL09905C0 |  | IC-07 ; Ceiling Prime & 1st coat (Slp Suite) |  | 0d | 2012-06-18 | 2012-06-18 | I07SL09501C0 |  |  |  |  | 129d | 0d | Cost |  |  | I07SL09905C0 |  | IC | C | 07 | SL | PA | 099 | 05 | BILL 8 | B08 | S2 | 01 | R00 | ACF06 | 099 |  |  |  |  |  |  |  |  |  |  |  |  |  |  |  |  |  | 330 | 958 |  |  |  |  |  |  |  |
| I07SL21115C0 |  | IC-07 ; 2nd Fix, Inst of Sprinkler droppers (Slp Suite) |  | 48d | 2012-06-18 | 2012-08-12 | I07SL09501C0 |  |  |  |  | 69.25d | 0d | MECHANICAL [1032 h]; Cost |  |  | I07SL21115C0 |  | IC | C | 07 | SL | ME | 211 | 15 | BILL 8 | B08 | S2 | 2F | R00 | ACF07 | 211 |  |  |  |  |  |  |  | MEP |  |  |  |  |  |  |  |  |  |  |  |  | 2n |  |  |  |  |  |
| I07SL23021C0 |  | IC-07 ; 2nd Fix, Inst of Flexible Duct & Plenum boxes (Slp Suite) |  | 48d | 2012-06-18 | 2012-08-12 | I07SL09205C0, I07SL09501C0 |  |  |  |  | 69.25d | 0d | MECHANICAL [892.8 h]; Cost |  |  | I07SL23021C0 |  | IC | C | 07 | SL | ME | 230 | 21 | BILL 8 | B08 | S2 | 2F | R00 | ACF07 | 230 |  |  |  |  |  |  |  | MEP |  |  |  |  |  |  |  |  |  |  |  |  | 2n |  |  |  |  |  |
| I07SL26017C0 |  | IC-07 ; Final Fix, Inst of Ceiling rose (Slp Suite) |  | 36d | 2012-06-18 | 2012-07-29 | I07SL09501C0, I07SL09501C0 FF |  |  |  |  | 57.25d | 0d | ELECTRICAL [33.6 h]; Cost |  |  | I07SL26017C0 |  | IC | C | 07 | SL | ME | 260 | 17 | BILL 8 | B08 | S2 | FF | R00 | ACF07 | 260 |  |  |  |  |  |  |  | MEP |  |  |  |  |  |  |  |  |  |  |  |  | FF |  |  |  |  |  |
| I07SL27002C0 |  | IC-07 ; 2nd Fix, Wiring Droppers (Slp Suite) |  | 48d | 2012-06-18 | 2012-08-12 | I07SL09501C0 |  |  |  |  | 63.25d | 0d | ELECTRICAL [853.2 h]; Cost |  |  | I07SL27002C0 |  | IC | C | 07 | SL | ME | 270 | 02 | BILL 8 | B08 | S2 | 2F | R00 | ACF07 | 270 |  |  |  |  |  |  |  | MEP |  |  |  |  |  |  |  |  |  |  |  |  | 2n |  |  |  |  |  |
| I07SL22021C0 |  | IC-07 ; Final Fix, Terminate Sanitary Ware & Appliances (Slp Suite) |  | 36d | 2012-06-23 | 2012-08-02 | I07SL22011C0, I07SL22025C0 |  |  |  |  | 107d | 85.75d | PLUMBING [1315.2 h]; Cost |  |  | I07SL22021C0 |  | IC | C | 07 | SL | ME | 220 | 21 | BILL 8 | B08 | S2 | FF | R00 | ACF07 | 220 |  |  |  |  |  |  |  | MEP |  |  |  |  |  |  |  |  |  |  |  |  | FF |  |  |  |  |  |
| I07SL21113C0 |  | IC-07 ; Final Fix, Inst of Sprinklers head/ Extinguisher (Slp Suite) |  | 36d | 2012-06-25 | 2012-08-05 | I07SL09501C0, I07SL21115C0 SS+6d |  |  |  |  | 75.25d | 18d | MECHANICAL [152.4 h]; Cost |  |  | I07SL21113C0 |  | IC | C | 07 | SL | ME | 211 | 13 | BILL 8 | B08 | S2 | FF | R00 | ACF07 | 211 |  |  |  |  |  |  |  | MEP |  |  |  |  |  |  |  |  |  |  |  |  | FF |  |  |  |  |  |
| I07SL23019C0 |  | IC-07 ; Final Fix, Inst of Grilles & Diffusers (Slp Suite) |  | 36d | 2012-06-25 | 2012-08-05 | I07SL09501C0, I07SL23021C0 SS+6d |  |  |  |  | 75.25d | 18d | MECHANICAL [757.2 h]; Cost |  |  | I07SL23019C0 |  | IC | C | 07 | SL | ME | 230 | 19 | BILL 8 | B08 | S2 | FF | R00 | ACF07 | 230 |  |  |  |  |  |  |  | MEP |  |  |  |  |  |  |  |  |  |  |  |  | FF |  |  |  |  |  |
| I07SL26003C0 |  | IC-07 ; Final Fix, Inst of Light fittings (Slp Suite) |  | 54d | 2012-06-25 | 2012-08-28 | I07SL09501C0, I07SL26017C0 SS+6d |  |  |  |  | 57.25d | 0d | ELECTRICAL [9577.2 h]; Cost |  |  | I07SL26003C0 |  | IC | C | 07 | SL | ME | 260 | 03 | BILL 8 | B08 | S2 | FF | R00 | ACF07 | 260 |  |  |  |  |  |  |  | MEP |  |  |  |  |  |  |  |  |  |  |  |  | FF |  |  |  |  |  |

| ID | WBS | Activity | Duration | Start | Finish | Predecessors | Complete | Remaining | Planned start | Planned finish | Total float | Free float | Resources | Cost | Actual cost | change id | CCAD BUILDING(SET) | CCAD PHASE(SET) | CCAD FLOOR(SET) | CCAD ZONE(SET) | CCAD WORK(SET) | CCAD SECTION(SET) | CCAD SERIAL No.(SET) | CCAD SUB ZONE MEP(SET) | CCAD CBS(SET) | CCAD BILL(SET) | CCAD HANDOVER(SET) | CCAD TAG(SET) | CCAD REV(SET) | CCADACF (SET) | CCAD CSA | CCAD SSCF | Change Order # | NEW ACTIVITY ID | CCAD DIVISION(SET) | user_number8 | user_integer1 | user_integer2 | user_number7 | RENZ % COMPLETE | Claimed This Month | U% | Act Selector % | R3 Partitions | July2011 Target% Complete | N_% | P_811 | P_711 | FILTER | CCAD MEQ | R3 Finish |
| --- | --- | --- | --- | --- | --- | --- | --- | --- | --- | --- | --- | --- | --- | --- | --- | --- | --- | --- | --- | --- | --- | --- | --- | --- | --- | --- | --- | --- | --- | --- | --- | --- | --- | --- | --- | --- | --- | --- | --- | --- | --- | --- | --- | --- | --- | --- | --- | --- | --- | --- | --- |
| I07SL27030C0 |  | IC-07 ; Final Fix, Inst of ELV device (Detector/Speaker) (Slp Suite) | 48d | 2012-06-25 | 2012-08-21 | I07SL09501C0, I07SL27002C0 SS+6d |  |  |  |  | 63.25d | 6d | ELECTRICAL [1707.6 h]; Cost |  |  | I07SL27030C0 | IC | C | 07 | SL | ME | 270 | 30 | FF | BILL 8 | B08 | S2 | FF | R00 | ACF07 | MEP | 270 |  |  |  |  |  |  |  |  |  |  |  |  |  |  |  |  |  |  |  |
| I07SL06101C0 |  | IC-07 ; Wood / caseworks (Slp Suite) | 54d | 2012-08-06 | 2012-10-09 | I07CO04405C0, I07SL09501C0, I07SL09601C0, I07SL09901C0, IAFWA00103M0, IAFCI22002R02 FS+184d |  |  |  |  | 21.25d | 0d | WOOD WORK/CASEWORK [147.29 no]; WOOD WORK/CASEWORK [1182 h]; Cost |  |  | I07SL06101C0 | IC | C | 07 | SL | WO | 061 | 01 |  | BILL 8 | B08 | S2 | WW | R00 | ACF06 |  | 061 | 332 | 960 |  |  |  |  |  |  |  |  |  |  |  |  |  |  |  |  |  |
| I07SL08107C0 |  | IC-07 ; Doors (Slp Suite) | 36d | 2012-08-06 | 2012-09-18 | I07SL08103C0, I07SL09501C0, I07SL09601C0, I07SL09901C0 |  |  |  |  | 64d | 0d | ASSORTED DOORS [420 h]; ASSORTED DOORS [42 no]; Cost |  |  | I07SL08107C0 | IC | C | 07 | SL | DO | 081 | 07 |  | BILL 8 | B08 | S2 | DR | R00 | ACF06 |  | 081 | 317 | 948 | 08 |  |  |  |  |  |  |  |  |  |  |  |  |  |  |  |  |
| I07SL09701C0 |  | IC-07 ; Wall finishes (ST, WD, WC) (Slp Suite) | 36d | 2012-08-06 | 2012-09-18 | I07SL26011C0, I07SL27020C0, IAFCI22002R02 FS+164d, I07SL09601C0 |  |  |  |  | 39.25d | 0d | ASSORTED WALL FINISH [249 h]; ASSORTED WALL FINISH [286 m2]; Cost |  |  | I07SL09701C0 | IC | C | 07 | SL | WF | 097 | 01 |  | BILL 8 | B08 | S2 | 01 | R00 | ACF06 |  | 097 | 105 | 1002 |  |  |  |  |  |  |  |  |  |  |  |  |  |  |  |  |  |
| I07SL01006C0 |  | IC-07 ; 2nd, Ceiling Inspection by Consultants (Slp Suite) | 0d | 2012-08-29 | 2012-08-29 | I07SL21115C0, I07SL23009C0, I07SL23015C0, I07SL27002C0, I07SL09501C0, I07SL21113C0, I07SL23019C0, I07SL26003C0, I07SL26017C0, I07SL27030C0, I07SL26015C0 |  |  |  |  | 57.25d | 36d | Cost |  |  | I07SL01006C0 | IC | C | 07 | SL | ME | 010 | 06 | 2n | BILL 8 | B08 | S2 | CI | R00 | ACF07 | MEP | 010 |  |  |  |  |  |  |  |  |  |  |  |  |  |  |  |  |  |  |  |
| I07SL08709C0 |  | IC-07 ; Ironmongery (Slp Suite) | 17d | 2012-09-19 | 2012-10-08 | I07SL08107C0 |  |  |  |  | 64d | 42.75d | IRONMONGERY [190 h]; IRONMONGERY [19 no]; Cost |  |  | I07SL08709C0 | IC | C | 07 | SL | DO | 087 | 09 |  | BILL 8 | B08 | S2 | IM | R00 | ACF06 |  | 087 | 322 | 951 | 08 |  |  |  |  |  |  |  |  |  |  |  |  |  |  |  |  |
| I07SL11001C0 |  | IC-07 ; Wall Protection (WP, CG, WG, FCG) (Slp Suite) | 24d | 2012-09-19 | 2012-10-16 | I07SL09701C0, I07SL09903C0 SS |  |  |  |  | 57d | 35.75d | FF&E [30 h]; Cost |  |  | I07SL11001C0 | IC | C | 07 | SL | WF | 110 | 01 |  | BILL 8 | B08 | S2 | 03 | R00 | ACF08 |  | b | 326 | 1001 |  |  |  |  |  |  |  |  |  |  |  |  |  |  |  |  |  |
| I07SL09503C0 |  | IC-07 ; Ceiling closure - ACT/Gypsum (Slp Suite) | 17.75d | 2012-10-10 | 2012-11-01 | I07SL01006C0, I07SL21115C0, I07SL26005C0, I07SL27001C0, I07SL27002C0, IAFOA09509C1 FF, I07SL06101C0, I07SL09701C0, I07SL23021C0, I07SL26053C0, I07SL26007C0 |  |  |  |  | 21.25d | 0d | ASSORTED CEILING FINISH [308.73 h]; CEILING GYPSUM [42.23 h]; ASSORTED CEILING FINISH [502 m2]; CEILING GYPSUM [129 m2]; Cost |  |  | I07SL09503C0 | IC | C | 07 | SL | CE | 095 | 03 |  | BILL 8 | B08 | S2 | 02 | R00 | ACF06 |  | 095 | 324 | 953 |  |  |  |  |  |  |  |  |  |  |  |  |  |  |  |  |  |
| I07SL09673C1 |  | IC-07, Carpet Tile Finish (Slp Suite/On Call Suite, Conference, Lng) | 0d | 2012-11-01 | 2012-11-01 | I07SL09903C0 SS, I07SL09907C0 SS |  |  |  |  | 45.25d | 24d | Cost |  |  |  | IC | C | 07 | SL | FF | 096 |  |  |  | B08 |  |  | R00 | ACF06 | CPT | CPT |  |  |  |  |  |  |  |  |  |  |  |  |  |  |  |  |  |  |  |
| I07SL09907C0 |  | IC-07 ; Ceiling Final paint (Slp Suite) | 0d | 2012-11-01 | 2012-11-01 | I07SL09601C0, I07SL09905C0, I07SL09503C0 |  |  |  |  | 45.25d | 0d | Cost |  |  | I07SL09907C0 | IC | C | 07 | SL | PA | 099 | 07 |  | BILL 8 | B08 | S2 | 02 | R00 | ACF06 |  | 099 | 331 | 959 |  |  |  |  |  |  |  |  |  |  |  |  |  |  |  |  |  |
| I07SL11003C0 |  | IC-07 ; FF & E (Slp Suite) | 12d | 2012-11-01 | 2012-11-17 | I07SL09601C0, I07SL06101C0, I07SL09503C0 |  |  |  |  | 33.25d | 12d | FF&E [311 h]; FF&E [165.52 no]; Cost |  |  | I07SL11003C0 | IC | C | 07 | SL | WO | 110 | 03 |  | BILL 8 | B08 | S2 | 04 | R00 | ACF08 |  | a | 333 | 961 |  |  |  |  |  |  |  |  |  |  |  |  |  |  |  |  |  |
| I07SL22027C0 |  | IC-07 ; Final Fix, Inst of All drain (Slp Suite) | 12d | 2012-11-01 | 2012-11-17 | I07SL09305C0, I07SL09503C0 |  |  |  |  | 21.25d | 0d | PLUMBING [630 h]; Cost |  |  | I07SL22027C0 | IC | C | 07 | SL | ME | 220 | 27 | FF | BILL 8 | B08 | S2 | FF | R00 | ACF07 | MEP | 220 |  |  |  |  |  |  |  |  |  |  |  |  |  |  |  |  |  |  |  |
| I07SL26019C0 |  | IC-07 ; Final Fix, Inst of Switch/Sockets (Slp Suite) | 12d | 2012-11-01 | 2012-11-17 | I07SL09901C0, I07SL09503C0 |  |  |  |  | 21.25d | 0d | ELECTRICAL [164.4 h]; Cost |  |  | I07SL26019C0 | IC | C | 07 | SL | ME | 260 | 19 | FF | BILL 8 | B08 | S2 | FF | R00 | ACF07 | MEP | 260 |  |  |  |  |  |  |  |  |  |  |  |  |  |  |  |  |  |  |  |
|  | 10 | **Precommissioning Tesing & snagging (Slp Suite, On-CallL Suite, Conf, Lng)** |  | 2012-11-17 | 2012-12-23 |  |  |  |  |  |  |  |  |  |  |  |  |  |  |  |  |  |  |  |  |  |  |  |  |  |  |  |  |  |  |  |  |  |  |  |  |  |  |  |  |  |  |  |  |  |  |
| I07TS01801C0 |  | IC-07 ; MEP de-snag, FIREM sign-off | 12d | 2012-11-17 | 2012-12-01 | I07SL22027C0, I07SL26015C0, I07SL22021C0, I07SL21113C0, I07SL23019C0, I07SL26017C0, I07SL26003C0, I07SL27030C0, I07SL26019C0 |  |  |  |  | 21.25d | 0d | TESTING & COMMISSIONING [2040 h]; Cost |  |  | I07TS01801C0 | IC | C | 07 | TS | SC | 018 | 01 |  | BILL 8 | B08 | S2 | 01 | R00 | ACF07 |  | 018 |  |  |  |  |  |  |  |  |  |  |  |  |  |  |  |  |  |  |  |
| I07TS01807C0 |  | IC-07 ; Touch-up & Clean / JV inspection /CIR /De-snag | 18d | 2012-12-01 | 2012-12-23 | I07CO04401C0, I07CO04402C0, I07CO04403C0, I07CO04405C0, I07CO04406C0, I07SL05501C0, I07SL05511C0, I07SL06101C0, I07SL07103C0, I07SL08103C0, I07SL08107C0, I07SL08709C0, I07SL09201C0, I07SL09202C0, I07SL09203C0, I07SL09205C0, I07SL09305C0, I07SL09501C0, I07SL09503C0, I07SL09601C0, I07SL09701C0, I07SL09901C0, I07SL09903C0, I07SL09905C0, I07SL09907C0, I07SL11001C0, I07SL11003C0, I07SL21113C0, I07SL22021C0, I07SL22025C0, I07SL22027C0, I07SL23019C0, I07SL26003C0, I07SL26015C0, I07SL26017C0, I07SL26019C0, I07SL27030C0, I07TS01801C0, I07SL09673C1, I07P109674C1, I07P209675C1 |  |  |  |  | 21.25d | 0d | TESTING & COMMISSIONING [128 h]; Cost |  |  | I07TS01802C0 | IC | C | 07 | TS | SC | 018 | 02 |  | BILL 8 | B08 | S2 | 02 | R00 | ACF07 |  | 018 |  |  |  |  |  |  |  |  |  |  |  |  |  |  |  |  |  |  |  |
| I07TS01811C0 |  | IC-07 ; Consultant's final de-snag inspection | 0d | 2012-12-23 | 2012-12-23 | I07TS01807C0 |  |  |  |  | 21.25d | 0.25d | Cost |  |  | I07TS01803C0 | IC | C | 07 | TS | SC | 018 | 03 |  | BILL 8 | B08 | S2 | 03 | R00 | ACF07 |  | 018 |  |  |  |  |  |  |  |  |  |  |  |  |  |  |  |  |  |  |  |
|  | 03 | **PAT RM-1** |  | 2011-05-15 | 2012-12-24 |  |  |  |  |  |  |  |  |  |  |  |  |  |  |  |  |  |  |  |  |  |  |  |  |  |  |  |  |  |  |  |  |  |  |  |  |  |  |  |  |  |  |  |  |  |  |
| I07P109201C0 |  | IC-07 ; Metal Studs (PAT RM-1) | 75d | 2011-05-15 A | 2011-11-17 | I07P123001C0 SS, IAFCI09201R02 FS+65d, I07CO04406C0 FF, I07CO04405C0 FF | 80% | 15d | 2011-08-02 | 2011-10-31 | 24.6d | 0d | PARTITIONS [4792 h]; PARTITIONS - Metal Studs [496 m]; Cost |  |  | I07P109201C0 | IC | C | 07 | P1 | PT | 092 | 01 |  | BILL 8 | B08 | S2 | 1F | R00 | ACF06 | GP | 092 | 313 | 944 |  | 0 | 0 | 0 | 0 | 5 | 173391.61 | 80 | PMS | R3 |  |  |  |  |  |  |  |
| I07P123001C0 |  | IC-07 ; 1st Fix, Inst. of Supports for MEP (PAT RM-1) | 22.88d | 2011-05-22 A | 2011-05-28 A | I07S107807C0 | 100% |  | 2011-06-18 | 2011-07-14 |  |  | MECHANICAL [577.2 h]; Cost [32540.2 AED] | 32,540.18 | 32,540.18 | I07P123001C0 | IC | C | 07 | P1 | ME | 230 | 01 | 1S | BILL 8 | B08 | S2 | 1F | R00 | ACF04 | MEP | 230 |  |  |  |  |  |  |  | 100 |  |  | M1F |  |  |  |  |  |  |  |  |
| I07P126001C0 |  | IC-07 ; 1st Fix, Inst of Trunking/Conduiting (PAT RM-1) | 90d | 2011-06-01 A | 2011-10-10 | I07P123001C0, I07S207807C0 | 90% | 9d | 2011-06-01 | 2011-09-18 | 75d | 0d | ELECTRICAL [397.2 h]; Cost [20466.7 AED] | 20,466.68 | 18,420.01 | I07P126001C0 | IC | C | 07 | P1 | ME | 260 | 01 | 1S | BILL 8 | B08 | S2 | 1F | R00 | ACF04 | MEP | 260 |  |  |  | 0 | 0 | 0 | 0 |  | 7127.02 |  | M1F |  | 25 | 45 |  |  |  |  |  |
| I07P109203C0 |  | IC-07 ; Partitions 1st face (PAT RM-1) | 75d | 2011-06-15 A | 2012-01-09 | I07P109201C0 | 45% | 41.25d | 2011-06-15 | 2011-09-14 | 42.75d | 21.75d | PARTITIONS [496 m]; PARTITIONS [3739 h]; Cost |  |  | I07P109203C0 | IC | C | 07 | P1 | PT | 092 | 03 |  | BILL 8 | B08 | S2 | 2F | R00 | ACF06 | GP | 092 | 314 | 945 |  | 0 | 0 | 0 | 0 |  | 34678.32 |  | P1F |  |  |  |  |  |  |  |  |
| I07P122011C0 |  | IC-07 ; 2nd Fix, Drainage/Water pipe (wall) (PAT RM-1) | 66d | 2011-06-15 A | 2012-01-30 | I07P109201C0 | 10% | 59.4d | 2011-06-15 | 2011-09-04 | 24.6d | 0d | PLUMBING [891.6 h]; Cost [34080.3 AED] | 34,080.3 | 3,408.03 | I07P122011C0 | IC | C | 07 | P1 | ME | 220 | 11 | 2n | BILL 8 | B08 | S2 | 2F | R00 | ACF07 | MEP | 220 |  |  |  |  |  |  |  |  | 11315.07 |  |  |  | 25 | 10 |  |  |  |  |  |
| I07P127010C0 |  | IC-07 ; 1st Fix, Inst of Trunking for ELV system (PAT RM-1) | 108d | 2011-06-18 A | 2011-10-19 | I07P123001C0, I07P126001C0 SS+14d, I07S207807C0 | 85% | 16.2d | 2011-06-18 | 2011-10-25 | 75d | 0d | ELECTRICAL [914.4 h]; Cost [47960 AED] | 47,960.04 | 40,766.03 | I07P127010C0 | IC | C | 07 | P1 | ME | 270 | 10 | 1S | BILL 8 | B08 | S2 | 1F | R00 | ACF04 | MEP | 270 |  |  |  | 0 | 0 | 0 | 0 |  | 13911.7 |  | M1F |  | 25 | 45 | 65 | 45 |  |  |  |
| I07P126013C0 |  | IC-07 ; 1st Fix, Inst of Cable Tray (PAT RM-1) | 90d | 2011-06-21 A | 2011-11-24 | I07P123001C0, I07P127010C0 SS+10d, I07S207807C0 | 50% | 45d | 2011-06-30 | 2011-10-16 | 75d | 0d | ELECTRICAL [205.2 h]; Cost [11036 AED] | 11,035.96 | 5,517.98 | I07P126013C0 | IC | C | 07 | P1 | ME | 260 | 13 | 1S | BILL 8 | B08 | S2 | 1F | R00 | ACF04 | MEP | 260 |  |  |  |  |  |  |  |  | 5124 |  | M1F |  | 60 | 10 | 50 | 10 |  |  |  |
| I07P121111C0 |  | IC-07 ; 1st Fix, Inst of Sprinkler main pipe (PAT RM-1) | 150d | 2011-06-27 A | 2011-10-26 | I07P122005C0 SS+14d, I07P123001C0 | 85% | 22.5d | 2011-08-16 | 2012-02-18 | 75d | 0d | MECHANICAL [264 h]; Cost [14398.4 AED] | 14,398.38 | 12,238.62 | I07P121111C0 | IC | C | 07 | P1 | ME | 211 | 11 | 1S | BILL 8 | B08 | S2 | 1F | R00 | ACF04 | MEP | 211 |  |  |  | 0 | 0 | 0 | 0 |  | 4178.23 | 85 | M1F |  | 55 | 50 | 85 | 50 |  |  |  |
| I07P122019C0 |  | IC-07 ; 1st Fix, Inst of Drainage pipe (ceiling) (PAT RM-1) | 108d | 2011-06-27 A | 2011-11-16 | I07P123001C0, I07P126013C0 SS+14d | 65% | 37.8d | 2011-07-17 | 2011-11-27 | 75d | 0d | PLUMBING [630 h]; Cost [34080.3 AED] | 34,080.3 | 22,152.2 | I07P122019C0 | IC | C | 07 | P1 | ME | 220 | 19 | 1S | BILL 8 | B08 | S2 | 1F | R00 | ACF04 | MEP | 220 |  |  |  | 0 | 0 | 0 | 0 |  | 19753.63 |  | M1F |  | 65 | 50 | 60 | 50 |  |  |  |
| I07P121117C0 |  | IC-07 ; 1st Fix, Inst of Sprinkler branch pipe (PAT RM-1) | 108d | 2011-07-10 A | 2012-01-02 | I07P109201C0, I07P121111C0, I07P105503C0 FF+18d | 85% | 16.2d | 2011-09-15 | 2012-01-26 | 96d | 75d | MECHANICAL [609.6 h]; Cost [33303.7 AED] | 33,303.68 | 28,308.12 | I07P121117C0 | IC | C | 07 | P1 | ME | 211 | 17 | 1S | BILL 8 | B08 | S2 | 1F | R00 | ACF04 | MEP | 211 |  |  |  | 0 | 0 | 0 | 0 |  |  | 85 | M1F |  | 45 | 40 | 75 | 40 |  |  |  |
| I07P122005C0 |  | IC-07 ; 1st Fix, Inst of Water supply pipe (ceiling) (PAT RM-1) | 72d | 2011-07-10 A | 2011-11-14 | I07P122019C0 SS+12d, I07P123001C0 | 50% | 36d | 2011-07-18 | 2011-10-11 | 75d | 0d | PLUMBING [1670.4 h]; Cost [90220.7 AED] | 90,220.67 | 45,110.33 | I07P122005C0 | IC | C | 07 | P1 | ME | 220 | 05 | 1S | BILL 8 | B08 | S2 | 1F | R00 | ACF04 | MEP | 220 |  |  |  | 0 | 0 | 0 | 0 |  |  | 30 | M1F |  | 30 | 5 | 20 | 5 |  |  |  |
| I07P123017C0 |  | IC-07 ; 1st Fix, Inst of CHW pipe (PAT RM-1) | 90d | 2011-07-10 A | 2012-01-02 | I07P121111C0 SS+14d, I07P123001C0, I07P105503C0 FF+18d | 60% | 36d | 2011-08-16 | 2011-12-06 | 42d | 0d | MECHANICAL [2832 h]; Cost [154640 AED] | 154,640.47 | 92,784.28 | I07P123017C0 | IC | C | 07 | P1 | ME | 230 | 17 | 1S | BILL 8 | B08 | S2 | 1F | R00 | ACF04 | MEP | 230 |  |  |  | 0 | 0 | 0 | 0 |  |  |  | M1F |  | 25 | 20 | 50 | 20 |  |  |  |
| I07P123023C0 |  | IC-07 ; 1st Fix, Inst of Main Ducting (PAT RM-1) | 90d | 2011-07-10 A | 2011-12-27 | I07P123001C0, I07P123017C0 SS+10d | 65% | 31.5d | 2011-08-28 | 2011-12-18 | 87.3d | 0d | MECHANICAL [7574.4 h]; Cost [413624 AED] | 413,624.26 | 268,855.77 | I07P123023C0 | IC | C | 07 | P1 | ME | 230 | 23 | 1S | BILL 8 | B08 | S2 | 1F | R00 | ACF04 | MEP | 230 |  |  |  | 0 | 0 | 0 | 0 |  |  |  | M1F |  | 30 | 20 | 40 | 20 |  |  |  |
| I07P123008C0 |  | IC-07 ; 1st Fix, Inst of VCD's/FD's (PAT RM-1) | 48d | 2011-09-05 A | 2012-02-18 | I07P123023C0, I07P105503C0 FF+18d | 10% | 43.2d | 2011-11-03 | 2012-01-04 | 87.3d | 66.3d | MECHANICAL [910.8 h]; Cost [49161.7 AED] | 49,161.67 | 4,916.17 | I07P123008C0 | IC | C | 07 | P1 | ME | 230 | 08 | 1S | BILL 8 | B08 | S2 | 1F | R00 | ACF04 | MEP | 230 |  |  |  |  |  |  |  |  |  |  | M1F |  | 20 |  |  |  | zero |  |  |
| I07P122007C0 |  | IC-07 ; 1st Fix, Inst of Medical Gas pipe (PAT RM-1) | 48d | 2011-10-01 | 2011-11-29 | I07P121111C0 SS+14d, I07P123001C0 |  |  |  |  | 75d | 39d | PLUMBING [328.8 h]; Cost |  |  | I07P122007C0 | IC | C | 07 | P1 | ME | 220 | 07 | 1S | BILL 8 | B08 | S2 | 1F | R00 | ACF04 | MEP | 220 |  |  |  |  |  |  |  |  |  |  | M1F |  |  |  |  |  |  |  |  |
| I07P122015C0 |  | IC-07 ; 2nd Fix, Medical Gas pipe (PAT RM-1) | 48d | 2011-11-19 | 2012-01-16 | I07P109201C0, I07P122007C0 SS |  |  |  |  | 36d | 11.4d | PLUMBING [589.2 h]; Cost |  |  | I07P122015C0 | IC | C | 07 | P1 | ME | 220 | 15 | 2n | BILL 8 | B08 | S2 | 2F | R00 | ACF07 | MEP | 220 |  |  |  |  |  |  |  |  |  |  |  |  |  |  |  |  |  |  |  |
| I07P126009C0 |  | IC-07 ; 2nd Fix, Inst of Wall conduites (PAT RM-1) | 48d | 2011-11-19 | 2012-01-16 | I07P109201C0 |  |  |  |  | 36d | 11.4d | ELECTRICAL [1036.8 h]; Cost |  |  | I07P126009C0 | IC | C | 07 | P1 | ME | 260 | 09 | 2n | BILL 8 | B08 | S2 | 2F | R00 | ACF07 | MEP | 260 |  |  |  |  |  |  |  |  |  |  |  |  |  |  |  |  |  |  |  |
| I07P105503C0 |  | IC-07 ; Ceiling Support for medical equipment (PAT RM-1) | 15d | 2011-11-22 | 2011-12-11 | I07P109201C0, IAFCI22001R20 FS+65d |  |  |  |  | 42d | 0d | SECONDARY STEEL [245 h]; STRUCTURAL STEEL [17 T(Fe)]; Cost |  |  | D03EY05503C0 | IC | C | 07 | P1 | SW | 055 | 03 |  | BILL 8 | B08 | S2 | 03 | R00 | ACF03 |  | b | 335 | 962 |  |  |  |  |  |  |  |  |  |  |  |  |  |  |  |  |  |
| I07P127001C0 |  | IC-07 ; 1st Fix, Wiring/ Cabling work (PAT RM-1) | 48d | 2011-11-27 | 2012-01-23 | I07P126001C0, I07P126013C0, I07P127010C0 |  |  |  |  | 108d | 87d | ELECTRICAL [213.6 h]; Cost |  |  | I07P127001C0 | IC | C | 07 | P1 | ME | 270 | 01 | 1S | BILL 8 | B08 | S2 | 1F | R00 | ACF04 | MEP | 270 |  |  |  |  |  |  |  |  |  |  | M1F |  |  |  |  |  |  |  |  |
| I07P108103C0 |  | IC-07 ; Door Frames (PAT RM-1) | 36d | 2011-12-15 | 2012-01-26 | I07P109201C0, GNHE08101C0 FS+69d, I06SL08103C0 SS+3d |  |  |  |  | 58.75d | 0d | ASSORTED DOORS [254 h]; Cost |  |  | I07P108103C0 | IC | C | 07 | P1 | DO | 081 | 03 |  | BILL 8 | B08 | S2 | DF | R00 | ACF06 |  | 081 | 316 | 947 | 08 |  |  |  |  |  |  |  |  |  |  |  |  |  |  |  |  |
| I07P123009C0 |  | IC-07 ; 2nd Fix, Inst of VAV'S CHW connection (PAT RM-1) | 42d | 2012-01-03 | 2012-02-21 | I07P123017C0 |  |  |  |  | 42d | 0d | MECHANICAL [1722 h]; Cost |  |  | I07P123009C0 | IC | C | 07 | P1 | ME | 230 | 09 | 2n | BILL 8 | B08 | S2 | 2F | R00 | ACF07 | MEP | 230 |  |  |  |  |  |  |  |  |  |  |  |  | 25 |  |  |  | zero |  |  |
| I07P105511C0 |  | IC-07 ; Wall reinforcement for MEP/Medical (PAT RM-1) | 24d | 2012-01-07 | 2012-02-02 | I07P109201C0, IAFCI22001R02 FS+65d |  |  |  |  | 21d | 0d | SECONDARY STEEL [77 h]; Cost |  |  | I07P105511C0 | IC | C | 07 | P1 | SW | 055 | 11 |  | BILL 8 | B08 | S2 | 03 | R00 | ACF03 |  | b |  |  |  |  |  |  |  |  |  |  |  |  |  |  |  |  |  |  |  |
| I07P101005C0 |  | IC-07 ; 2nd, Wall Inspection by Consultant (PAT RM-1) | 0d | 2012-01-30 | 2012-01-30 | I07P122011C0, I07P122015C0, I07P126009C0 |  |  |  |  | 24.6d | 3.6d | Cost |  |  | I07P101005C0 | IC | C | 07 | P1 | ME | 010 | 05 | 2n | BILL 8 | B08 | S2 | WI | R00 | ACF07 | MEP | 010 |  |  |  |  |  |  |  |  |  |  |  |  |  |  |  |  |  |  |  |
| I07P109205C0 |  | IC-07 ; Partitions Closing (PAT RM-1) | 48d | 2012-02-05 | 2012-03-31 | I07P101005C0, I07P105511C0, I07P109203C0, I07P122005C0, I07P122019C0, IAFOA09210C1 FF, I07P108103C0 FF, I07P121117C0 FF, IAFCI22001R20 FS+65d |  |  |  |  | 21d | 0d | PARTITIONS [496 m]; PARTITIONS [4792 h]; Cost |  |  | I07P109205C0 | IC | C | 07 | P1 | PT | 092 | 05 |  | BILL 8 | B08 | S2 | FF | R00 | ACF06 | GP | 092 | 315 | 946 |  |  |  |  |  |  |  |  | P2F | R3 |  |  |  |  |  |  |  |
| I07P123015C0 |  | IC-07 ; 2nd Fix, Insulation of CHW pipe & Duct (PAT RM-1) | 42d | 2012-02-22 | 2012-04-10 | I07P123009C0, I07P123017C0, I07P123023C0 |  |  |  |  | 42d | 21d | MECHANICAL [3896.4 h]; Cost |  |  | I07P123015C0 | IC | C | 07 | P1 | ME | 230 | 15 | 2n | BILL 8 | B08 | S2 | 2F | R00 | ACF07 | MEP | 230 |  |  |  |  |  |  |  |  |  |  |  |  |  |  |  |  |  |  |  |
| I07P107103C0 |  | IC-07 ; Waterproofing (PAT RM-1) | 12d | 2012-04-01 | 2012-04-14 | I07P108103C0, I07P109205C0 |  |  |  |  | 93d | 0d | THERMAL & MOISTURE [144 h]; THERMAL & MOISTURE [935 m2]; Cost |  |  | I07P107103C0 | IC | C | 07 | P1 | FF | 071 | 03 |  | BILL 8 | B08 | S2 | 01 | R00 | ACF03 |  | 071 | 105 | 999 |  |  |  |  |  |  |  |  |  |  |  |  |  |  |  |  |  |
| I07P109901C0 |  | IC-07 ; Wall Prime & 1st coat (PAT RM-1) | 30d | 2012-04-01 | 2012-05-05 | I07P109205C0 |  |  |  |  | 21d | 0d | WALL PAINT [901 h]; WALL PAINT [1124 m2]; Cost |  |  | I07P109901C0 | IC | C | 07 | P1 | PA | 099 | 01 |  | BILL 8 | B08 | S2 | 01 | R00 | ACF06 |  | 099 | 328 | 956 |  |  |  |  |  |  |  |  |  |  |  |  |  |  |  |  |  |
| I07P126005C0 |  | IC-07 ; 2nd Fix, Wiring for Power/Lighting/Emergency (PAT RM-1) | 48d | 2012-04-01 | 2012-05-26 | I07P109205C0 |  |  |  |  | 99d | 0d | ELECTRICAL [853.2 h]; Cost |  |  | I07P126005C0 | IC | C | 07 | P1 | ME | 260 | 05 | 2n | BILL 8 | B08 | S2 | 2F | R00 | ACF07 | MEP | 260 |  |  |  |  |  |  |  |  |  |  |  |  |  |  |  |  |  |  |  |
| I07P126007C0 |  | IC-07 ; 2nd Fix, Cable Pulling (PAT RM-1) | 54d | 2012-04-01 | 2012-06-02 | I07P109201C0 SS+6d, I07P109205C0 |  |  |  |  | 129d | 108d | ELECTRICAL [3498 h]; Cost |  |  | I07P126007C0 | IC | C | 07 | P1 | ME | 260 | 07 | 2n | BILL 8 | B08 | S2 | 2F | R00 | ACF07 | MEP | 260 |  |  |  |  |  |  |  |  |  |  |  |  | 25 |  |  |  | zero |  |  |
| I07P126053C0 |  | IC-07 ; 2nd Fix, Wiring / Cabling (PAT RM-1) | 48d | 2012-04-01 | 2012-05-26 | I07P109203C0, I07P109205C0 |  |  |  |  | 135d | 114d | ELECTRICAL [853.2 h]; Cost |  |  | I07P126053C0 | IC | C | 07 | P1 | ME | 260 | 53 | 2n | BILL 8 | B08 | S2 | 2F | R00 | ACF07 | MEP | 260 | 389 | 977 |  |  |  |  |  |  |  |  |  |  |  |  |  |  |  |  |  |
| I07P127020C0 |  | IC-07 ; 2nd Fix, Inst of ELV Equipment (Panels) (PAT RM-1) | 60d | 2012-04-01 | 2012-06-09 | I07P109205C0 |  |  |  |  | 87d | 48d | ELECTRICAL [1214.4 h]; Cost |  |  | I07P127020C0 | IC | C | 07 | P1 | ME | 270 | 20 | 2n | BILL 8 | B08 | S2 | 2F | R00 | ACF04 | MEP | 270 |  |  |  |  |  |  |  |  |  |  |  |  |  |  |  |  |  | E |  |
| I07P126011C0 |  | IC-07 ; 2nd Fix, Inst of Equipment (DB) (PAT RM-1) | 66d | 2012-04-09 | 2012-06-25 | I07P109205C0, I06SL26011C0 SS+3d |  |  |  |  | 42.25d | 0d | ELECTRICAL [1887.6 h]; Cost |  |  | I07P126011C0 | IC | C | 07 | P1 | ME | 260 | 11 | 2n | BILL 8 | B08 | S2 | 2F | R00 | ACF04 | MEP | 260 |  |  |  |  |  |  |  |  |  |  |  |  |  |  |  |  |  | E |  |
| I07P109305C0 |  | IC-07 ; Ceramic floor tile (PAT RM-1) | 24d | 2012-04-15 | 2012-05-12 | I07P107103C0 |  |  |  |  | 93d | 0d | CERAMIC FLOOR TILES [112 h]; CERAMIC FLOOR TILES [59 m2]; Cost |  |  | I07P109305C0 | IC | C | 07 | P1 | FF | 093 | 05 |  | BILL 8 | B08 | S2 | 02 | R00 | ACF06 |  | CT | 106 | 1000 |  |  |  |  |  |  |  |  |  |  |  |  |  |  |  |  |  |
| I07P105501C0 |  | IC-07 ; Handrails & balustrade (PAT RM-1) | 33.25d | 2012-05-06 | 2012-06-13 | I07P109901C0 |  |  |  |  | 65.75d | 44.75d | SECONDARY STEEL [346 h]; Cost |  |  | I07P105501C0 | IC | C | 07 | P1 | SW | 055 | 01 |  | BILL 8 | B08 | S2 | 01 | R00 | ACF03 |  | a |  |  |  |  |  |  |  |  |  |  |  |  |  |  |  |  |  |  |  |
| I07P109501C0 |  | IC-07 ; Ceiling Grid and Service Tile (PAT RM-1) | 36d | 2012-05-06 | 2012-06-17 | I07P105503C0, I07P109205C0, I07P121117C0, I07P123008C0, I07P123009C0, I07P123015C0, I07P127001C0, IAFCI22002R02 FS+65d, I07P109901C0 |  |  |  |  | 21d | 0d | CEILING GRID FOR GYPSUM [1982.09 h]; CEILING GRID FOR GYPSUM [169.45 m2]; Cost |  |  | I07P109501C0 | IC | C | 07 | P1 | CE | 095 | 01 |  | BILL 8 | B08 | S2 | 01 | R00 | ACF06 |  | 095 | 323 | 952 |  |  |  |  |  |  |  |  |  |  |  |  |  |  |  |  |  |
| I07P109510C0 |  | IC-07 ; Patient Lift Ceiling Rail (by others) (PAT RM-1) | 0d | 2012-05-06 | 2012-05-06 | I07P109501C0 SS |  |  |  |  | 153d | 132d | Cost |  |  | I06P109501C0 | IC | C | 07 | P1 | CE | 095 | 10 |  | BILL 8 | B08 | S2 | 02 | R00 | ACF06 |  | 095 | 323 | 952 |  |  |  |  |  |  |  |  |  |  |  |  |  |  |  |  |  |
| I07P122025C0 |  | IC-07 ; Final Fix, Inst of Sanitary Ware (PAT RM-1) | 48d | 2012-05-13 | 2012-07-08 | I07P109205C0, I07P109305C0, A10230 FS+148d |  |  |  |  | 93d | 0d | PLUMBING [1849.2 h]; Cost |  |  | I07P122025C0 | IC | C | 07 | P1 | ME | 220 | 25 | FF | BILL 8 | B08 | S2 | FF | R00 | ACF07 | MEP | 220 |  |  |  |  |  |  |  |  |  |  |  |  |  |  |  |  |  |  |  |
| I07P126015C0 |  | IC-07 ; Final Fix, Termination & Gladding of Cables (PAT RM-1) | 36d | 2012-05-27 | 2012-07-08 | I07P126005C0 |  |  |  |  | 99d | 72.5d | ELECTRICAL [158.4 h]; Cost |  |  | I07P126015C0 | IC | C | 07 | P1 | ME | 260 | 15 | FF | BILL 8 | B08 | S2 | FF | R00 | ACF07 | MEP | 260 |  |  |  |  |  |  |  |  |  |  |  |  |  |  |  |  |  |  |  |
| I07P109202C0 |  | IC-07 ; Rolling Shade (PAT RM-1) | 30d | 2012-06-18 | 2012-07-22 | I07P109501C0 |  |  |  |  | 129d | 108d | PARTITIONS [839 h]; Cost |  |  | I06P109201C0 | IC | C | 07 | P1 | FI | 092 | 02 |  | BILL 8 | B08 | S2 | 02 | R00 | ACF06 | GP | 092 | 313 | 944 |  |  |  |  |  |  |  |  |  |  |  |  |  |  |  |  |  |
| I07P109601C0 |  | IC-07 ; Flooring (Rubber,Terrazzo) (PAT RM-1) | 42d | 2012-06-18 | 2012-08-05 | I07P109501C0, I07P105501C0 FF |  |  |  |  | 21d | 0d | TERRAZO FLOOR [784 h]; TERRAZO FLOOR [433 m2]; RUBBER FLOOR [206 m2]; RUBBER FLOOR [88 h]; Cost |  |  | I07P109601C0 | IC | C | 07 | P1 | FF | 096 | 01 |  | BILL 8 | B08 | S2 | 01 | R00 | ACF06 |  | RF | 326 | 955 |  |  |  |  |  |  |  |  |  |  |  |  |  |  |  |  |  |
| I07P109903C0 |  | IC-07 ; Wall Final Paint (PAT RM-1) | 30d | 2012-06-18 | 2012-07-22 | I07P109901C0, I07P109905C0, I07P109501C0 |  |  |  |  | 129d | 78d | WALL PAINT [486 h]; WALL PAINT [605 m2]; Cost |  |  | I07P109903C0 | IC | C | 07 | P1 | PA | 099 | 03 |  | BILL 8 | B08 | S2 | 02 | R00 | ACF06 |  | 099 | 329 | 957 |  |  |  |  |  |  |  |  |  |  |  |  |  |  |  |  |  |
| I07P109905C0 |  | IC-07 ; Ceiling Prime & 1st coat (PAT RM-1) | 0d | 2012-06-18 | 2012-06-18 | I07P109501C0 |  |  |  |  | 129d | 0d | Cost |  |  | I07P109905C0 | IC | C | 07 | P1 | PA | 099 | 05 |  | BILL 8 | B08 | S2 | 01 | R00 | ACF06 |  | 099 | 330 | 958 |  |  |  |  |  |  |  |  |  |  |  |  |  |  |  |  |  |
| I07P121115C0 |  | IC-07 ; 2nd Fix, Inst of Sprinkler droppers (PAT RM-1) | 48d | 2012-06-18 | 2012-08-12 | I07P109501C0 |  |  |  |  | 33d | 0d | MECHANICAL [1032 h]; Cost |  |  | I07P121115C0 | IC | C | 07 | P1 | ME | 211 | 15 | 2n | BILL 8 | B08 | S2 | 2F | R00 | ACF07 | MEP | 211 |  |  |  |  |  |  |  |  |  |  |  |  |  |  |  |  |  |  |  |
| I07P123021C0 |  | IC-07 ; 2nd Fix, Inst of Flexible Duct & Plenum boxes (PAT RM-1) | 48d | 2012-06-18 | 2012-08-12 | I07P109205C0, I07P109501C0 |  |  |  |  | 69d | 0d | MECHANICAL [892.8 h]; Cost |  |  | I07P123021C0 | IC | C | 07 | P1 | ME | 230 | 21 | 2n | BILL 8 | B08 | S2 | 2F | R00 | ACF07 | MEP | 230 |  |  |  |  |  |  |  |  |  |  |  |  |  |  |  |  |  |  |  |
| I07P126017C0 |  | IC-07 ; Final Fix, Inst of Ceiling rose (PAT RM-1) | 36d | 2012-06-18 | 2012-07-29 | I07P109501C0 |  |  |  |  | 57d | 0d | ELECTRICAL [33.6 h]; Cost |  |  | I07P126017C0 | IC | C | 07 | P1 | ME | 260 | 17 | FF | BILL 8 | B08 | S2 | FF | R00 | ACF07 | MEP | 260 |  |  |  |  |  |  |  |  |  |  |  |  |  |  |  |  |  |  |  |
| I07P127002C0 |  | IC-07 ; 2nd Fix, Wiring Droppers (PAT RM-1) | 48d | 2012-06-18 | 2012-08-12 | I07P109501C0 |  |  |  |  | 63d | 0d | ELECTRICAL [853.2 h]; Cost |  |  | I07P127002C0 | IC | C | 07 | P1 | ME | 270 | 02 | 2n | BILL 8 | B08 | S2 | 2F | R00 | ACF07 | MEP | 270 |  |  |  |  |  |  |  |  |  |  |  |  |  |  |  |  |  |  |  |
| I07P123019C0 |  | IC-07 ; Final Fix, Inst of Grilles & Diffusers (PAT RM-1) | 36d | 2012-06-25 | 2012-08-05 | I07P109501C0, I07P123021C0 SS+6d |  |  |  |  | 75d | 48.5d | MECHANICAL [757.2 h]; Cost |  |  | I07P123019C0 | IC | C | 07 | P1 | ME | 230 | 19 | FF | BILL 8 | B08 | S2 | FF | R00 | ACF07 | MEP | 230 |  |  |  |  |  |  |  |  |  |  |  |  |  |  |  |  |  |  |  |
| I07P126003C0 |  | IC-07 ; Final Fix, Inst of Light fittings (PAT RM-1) | 54d | 2012-06-25 | 2012-08-28 | I07P109501C0, I07P126017C0 SS+6d |  |  |  |  | 57d | 30.5d | ELECTRICAL [9577.2 h]; Cost |  |  | I07P126003C0 | IC | C | 07 | P1 | ME | 260 | 03 | FF | BILL 8 | B08 | S2 | FF | R00 | ACF07 | MEP | 260 |  |  |  |  |  |  |  |  |  |  |  |  |  |  |  |  |  |  |  |
| I07P127030C0 |  | IC-07 ; Final Fix, Inst of ELV device (Detector/Speaker) (PAT RM-1) | 48d | 2012-06-25 | 2012-08-21 | I07P109501C0, I07P127002C0 SS+6d |  |  |  |  | 63d | 36.5d | ELECTRICAL [1707.6 h]; Cost |  |  | I07P127030C0 | IC | C | 07 | P1 | ME | 270 | 30 | FF | BILL 8 | B08 | S2 | FF | R00 | ACF07 | MEP | 270 |  |  |  |  |  |  |  |  |  |  |  |  |  |  |  |  |  |  |  |
| I07P122021C0 |  | IC-07 ; Final Fix, Terminate Sanitary Ware & Appliances (PAT RM-1) | 36d | 2012-07-09 | 2012-08-21 | I07P122011C0, I07P122025C0 |  |  |  |  | 93d | 72d | PLUMBING [1315.2 h]; Cost |  |  | I07P122021C0 | IC | C | 07 | P1 | ME | 220 | 21 | FF | BILL 8 | B08 | S2 | FF | R00 | ACF07 | MEP | 220 |  |  |  |  |  |  |  |  |  |  |  |  |  |  |  |  |  |  |  |
| I07P106101C0 |  | IC-07 ; Wood / caseworks (PAT RM-1) | 54d | 2012-08-06 | 2012-10-09 | I07CO04405C0, I07P109501C0, I07P109601C0, I07P109901C0, IAFWA00103M0, IAFCI22002R02 FS+184d |  |  |  |  | 21d | 0d | WOOD WORK/CASEWORK [282.36 no]; WOOD WORK/CASEWORK [2265 h]; Cost |  |  | I07P106101C0 | IC | C | 07 | P1 | WO | 061 | 01 |  | BILL 8 | B08 | S2 | WW | R00 | ACF06 |  | 061 | 332 | 960 |  |  |  |  |  |  |  |  |  |  |  |  |  |  |  |  | R3 |
| I07P106102C0 |  | IC-07 ; Head/Foot Wall (PAT RM-1) | 30.5d | 2012-08-06 | 2012-09-12 | I07P109501C0, IAFWA00103M0, IAFCI22002R02 FS+184d, I07P106101C0 SS |  |  |  |  | 26.5d | 0d | WOOD WORK/CASEWORK [1479 h]; Cost |  |  | I07P106102C0 | IC | C | 07 | P1 | WO | 061 | 02 |  | BILL 8 | B08 | S2 | WW | R00 | ACF06 |  | 061 | 332 | 960 |  |  |  |  |  |  |  |  |  |  |  |  |  |  |  |  | R3 |

| ID | WBS | Activity | Duration | Start | Finish | Predecessors | Complete | Remaining | Planned start | Planned finish | Total float | Free float | Resources | Cost | Actual cost | Change Order # | NEW ACTIVITY ID | change id | CCAD BUILDING(SET) | CCAD PHASE(SET) | CCAD DIVISION(SET) | CCAD FLOOR(SET) | CCAD ZONE(SET) | CCAD WORK(SET) | CCAD SECTION(SET) | CCAD SERIAL No.(SET) | CCAD CBS(SET) | CCAD BILL(SET) | CCAD HANDOVER(SET) | CCAD TAG(SET) | CCAD REV(SET) | CCADACF (SET) | CCAD SSCF | R3 Finish | CCAD SUB ZONE MEP(SET) | CCAD CSA | user_number8 | user_integer1 | user_integer2 | user_number7 | RENZ % COMPLETE | Claimed This Month | U% | Act Selector % | R3 Partitions | July2011 Target% Complete | N_% | P_811 | P_711 | FILTER | CCAD MEQ |
| --- | --- | --- | --- | --- | --- | --- | --- | --- | --- | --- | --- | --- | --- | --- | --- | --- | --- | --- | --- | --- | --- | --- | --- | --- | --- | --- | --- | --- | --- | --- | --- | --- | --- | --- | --- | --- | --- | --- | --- | --- | --- | --- | --- | --- | --- | --- | --- | --- | --- | --- | --- |
| I07P108107C0 |  | IC-07 ; Doors (PAT RM-1) | 36d | 2012-08-06 | 2012-09-18 | I07P108103C0, I07P109501C0, I07P109601C0, I07P109901C0 |  |  |  |  | 57d | 0d | ASSORTED DOORS [800 h]; ASSORTED DOORS [80 no]; Cost |  |  | 317 | 948 | I07P108107C0 | IC | C | 08 | 07 | P1 | DO | 081 | 07 | BILL 8 | B08 | S2 | DR | R00 | ACF06 | 081 |  |  |  |  |  |  |  |  |  |  |  |  |  |  |  |  |  |  |
| I07P109701C0 |  | IC-07 ; Wall finishes (ST, WD, WC) (PAT RM-1) | 36d | 2012-08-06 | 2012-09-18 | I07P126011C0, I07P127020C0, IAFCI22002R02 FS+164d, I07P109601C0 |  |  |  |  | 39d | 0d | ASSORTED WALL FINISH [477 h]; ASSORTED WALL FINISH [548 m2]; Cost |  |  | 105 | 1002 | I07P109701C0 | IC | C |  | 07 | P1 | WF | 097 | 01 | BILL 8 | B08 | S2 | 01 | R00 | ACF06 | 097 | R3 |  |  |  |  |  |  |  |  |  |  |  |  |  |  |  |  |  |
| I07P121113C0 |  | IC-07 ; Final Fix, Inst of Sprinklers head/ Extinguisher (PAT RM-1) | 36d | 2012-08-13 | 2012-09-25 | I07P109501C0, I07P121115C0 |  |  |  |  | 33d | 6.5d | MECHANICAL [152.4 h]; Cost |  |  |  |  | I07P121113C0 | IC | C |  | 07 | P1 | ME | 211 | 13 | BILL 8 | B08 | S2 | FF | R00 | ACF07 | 211 |  | FF | MEP |  |  |  |  |  |  |  |  |  |  |  |  |  |  |  |
| I07P122029C0 |  | IC-07 ; Final Fix, Medical Gas pipe (PAT RM-1) | 18d | 2012-09-12 | 2012-10-03 | I07P109501C0, I07P106102C0 |  |  |  |  | 26.5d | 0d | PLUMBING [328.8 h]; Cost |  |  |  |  | I07P122029C0 | IC | C |  | 07 | P1 | ME | 220 | 29 | BILL 8 | B08 | S2 | FF | R00 | ACF07 | 220 |  | FF | MEP |  |  |  |  |  |  |  |  |  |  |  |  |  |  |  |
| I07P108709C0 |  | IC-07 ; Ironmongery (PAT RM-1) | 24d | 2012-09-19 | 2012-10-16 | I07P108107C0 |  |  |  |  | 57d | 36d | IRONMONGERY [370 h]; IRONMONGERY [37 no]; Cost |  |  | 322 | 951 | I07P108709C0 | IC | C | 08 | 07 | P1 | DO | 087 | 09 | BILL 8 | B08 | S2 | IM | R00 | ACF06 | 087 |  |  |  |  |  |  |  |  |  |  |  |  |  |  |  |  |  |  |
| I07P111001C0 |  | IC-07 ; Wall Protection (WP, CG, WG, FCG) (PAT RM-1) | 24d | 2012-09-19 | 2012-10-16 | I07P109701C0, I07P109903C0 SS |  |  |  |  | 57d | 36d | FF&E [58 h]; Cost |  |  | 326 | 1001 | I07P111001C0 | IC | C |  | 07 | P1 | WF | 110 | 01 | BILL 8 | B08 | S2 | 03 | R00 | ACF08 | b |  |  |  |  |  |  |  |  |  |  |  |  |  |  |  |  |  |  |
| I07P101006C0 |  | IC-07 ; 2nd, Ceiling Inspection by Consultants (PAT RM-1) | 0d | 2012-10-03 | 2012-10-03 | I07P121115C0, I07P123009C0, I07P123015C0, I07P127002C0, I07P109501C0, I07P121113C0, I07P122029C0, I07P123019C0, I07P126003C0, I07P126017C0, I07P127030C0, I07P126015C0 |  |  |  |  | 26.5d | 5.5d | Cost |  |  |  |  | I07P101006C0 | IC | C |  | 07 | P1 | ME | 010 | 06 | BILL 8 | B08 | S2 | CI | R00 | ACF07 | 010 |  | 2n | MEP |  |  |  |  |  |  |  |  |  |  |  |  |  |  |  |
| I07P109503C0 |  | IC-07 ; Ceiling closure - ACT/Gypsum (PAT RM-1) | 18d | 2012-10-10 | 2012-11-01 | I07P101006C0, I07P109510C0, I07P121115C0, I07P126005C0, I07P127001C0, I07P127002C0, IAFOA09509C1 FF, I07P106101C0, I07P109701C0, I07P123021C0, I07P126053C0, I07P126007C0 |  |  |  |  | 21d | 0d | ASSORTED CEILING FINISH [407.13 h]; CEILING GYPSUM [55.55 h]; ASSORTED CEILING FINISH [662 m2]; CEILING GYPSUM [169 m2]; Cost |  |  | 324 | 953 | I07P109503C0 | IC | C |  | 07 | P1 | CE | 095 | 03 | BILL 8 | B08 | S2 | 02 | R00 | ACF06 | 095 |  |  |  |  |  |  |  |  |  |  |  |  |  |  |  |  |  |  |
| I07P109674C1 |  | IC-07, Carpet Tile Finish (Patient Room-1) | 0d | 2012-11-03 | 2012-11-03 | I07P109903C0 SS, I07P109907C0 SS |  |  |  |  | 45d | 23.75d | Cost |  |  |  |  |  | IC | C |  | 07 | P1 | FF | 096 |  |  | B08 |  |  | R00 | ACF06 | CPT |  |  | CPT |  |  |  |  |  |  |  |  |  |  |  |  |  |  |  |
| I07P109907C0 |  | IC-07 ; Ceiling Final paint (PAT RM-1) | 0d | 2012-11-03 | 2012-11-03 | I07P109601C0, I07P109905C0, I07P109503C0 |  |  |  |  | 45d | 0d | Cost |  |  | 331 | 959 | I07P109907C0 | IC | C |  | 07 | P1 | PA | 099 | 07 | BILL 8 | B08 | S2 | 02 | R00 | ACF06 | 099 |  |  |  |  |  |  |  |  |  |  |  |  |  |  |  |  |  |  |
| I07P111003C0 |  | IC-07 ; FF & E (PAT RM-1) | 12d | 2012-11-03 | 2012-11-17 | I07P109601C0, I07P106101C0, I07P109503C0 |  |  |  |  | 33d | 12d | FF&E [587 h]; FF&E [312.94 no]; Cost |  |  | 333 | 961 | I07P111003C0 | IC | C |  | 07 | P1 | WO | 110 | 03 | BILL 8 | B08 | S2 | 04 | R00 | ACF08 | a |  |  |  |  |  |  |  |  |  |  |  |  |  |  |  |  |  |  |
| I07P122027C0 |  | IC-07 ; Final Fix, Inst of All drain (PAT RM-1) | 12d | 2012-11-03 | 2012-11-17 | I07P109305C0, I07P109503C0 |  |  |  |  | 21d | 0d | PLUMBING [630 h]; Cost |  |  |  |  | I07P122027C0 | IC | C |  | 07 | P1 | ME | 220 | 27 | BILL 8 | B08 | S2 | FF | R00 | ACF07 | 220 |  | FF | MEP |  |  |  |  |  |  |  |  |  |  |  |  |  |  |  |
| I07P126019C0 |  | IC-07 ; Final Fix, Inst of Switch/Sockets (PAT RM-1) | 12d | 2012-11-03 | 2012-11-17 | I07P109901C0, I07P109503C0 |  |  |  |  | 21d | 0d | ELECTRICAL [164.4 h]; Cost |  |  |  |  | I07P126019C0 | IC | C |  | 07 | P1 | ME | 260 | 19 | BILL 8 | B08 | S2 | FF | R00 | ACF07 | 260 |  | FF | MEP |  |  |  |  |  |  |  |  |  |  |  |  |  |  |  |
|  | 10 | **Precommissioning Tesing & snagging (PAT RM-1)** |  | 2012-11-18 | 2012-12-24 |  |  |  |  |  |  |  |  |  |  |  |  |  |  |  |  |  |  |  |  |  |  |  |  |  |  |  |  |  |  |  |  |  |  |  |  |  |  |  |  |  |  |  |  |  |  |
| I07TS01804C0 |  | IC-07 ; MEP de-snag, FIREM sign-off | 12d | 2012-11-18 | 2012-12-01 | I07P122025C0, I07P122027C0, I07P126015C0, I07P122021C0, I07P121113C0, I07P123019C0, I07P122029C0, I07P126017C0, I07P126003C0, I07P127030C0, I07P126019C0 |  |  |  |  | 21d | 0d | TESTING & COMMISSIONING [510 h]; Cost |  |  |  |  | I07TS01801C0 | IC | C |  | 07 | TS | SC | 018 | 01 | BILL 8 | B08 | S2 | 01 | R00 | ACF07 | 018 |  |  |  |  |  |  |  |  |  |  |  |  |  |  |  |  |  |  |
| I07TS01808C0 |  | IC-07 ; Touch-up & Clean / JV inspection /CIR /De-snag | 18d | 2012-12-02 | 2012-12-23 | I07CO04401C0, I07CO04402C0, I07CO04403C0, I07CO04405C0, I07CO04406C0, I07P105501C0, I07P105511C0, I07P106101C0, I07P106102C0, I07P107103C0, I07P108103C0, I07P108107C0, I07P108709C0, I07P109201C0, I07P109202C0, I07P109203C0, I07P109205C0, I07P109305C0, I07P109501C0, I07P109503C0, I07P109510C0, I07P109601C0, I07P109701C0, I07P109901C0, I07P109903C0, I07P109905C0, I07P109907C0, I07P111001C0, I07P111003C0, I07P121113C0, I07P122021C0, I07P122025C0, I07P122027C0, I07P122029C0, I07P123019C0, I07P126003C0, I07P126015C0, I07P126017C0, I07P126019C0, I07P127030C0, I07TS01804C0 |  |  |  |  | 21d | 0d | TESTING & COMMISSIONING [128 h]; Cost |  |  |  |  | I07TS01802C0 | IC | C |  | 07 | TS | SC | 018 | 02 | BILL 8 | B08 | S2 | 02 | R00 | ACF07 | 018 |  |  |  |  |  |  |  |  |  |  |  |  |  |  |  |  |  |  |
| I07TS01812C0 |  | IC-07 ; Consultant's final de-snag inspection | 0d | 2012-12-24 | 2012-12-24 | I07TS01808C0 |  |  |  |  | 21d | 0d | Cost |  |  |  |  | I07TS01803C0 | IC | C |  | 07 | TS | SC | 018 | 03 | BILL 8 | B08 | S2 | 03 | R00 | ACF07 | 018 |  |  |  |  |  |  |  |  |  |  |  |  |  |  |  |  |  |  |
|  | 04 | **PAT RM-2** |  | 2011-05-15 | 2012-12-24 |  |  |  |  |  |  |  |  |  |  |  |  |  |  |  |  |  |  |  |  |  |  |  |  |  |  |  |  |  |  |  |  |  |  |  |  |  |  |  |  |  |  |  |  |  |  |
| I07P209201C0 |  | IC-07 ; Metal Studs (PAT RM-2) | 75d | 2011-05-15 A | 2011-11-17 | I07P223001C0 SS, IAFCI09201R02 FS+65d, I07CO04406C0 FF, I07CO04405C0 FF | 80% | 15d | 2011-08-09 | 2011-11-10 | 24.6d | 0d | PARTITIONS [3060 h]; PARTITIONS - Metal Studs [316 m]; Cost |  |  | 313 | 944 | I07P209201C0 | IC | C |  | 07 | P2 | PT | 092 | 01 | BILL 8 | B08 | S2 | 1F | R00 | ACF06 | 092 |  |  | GP | 0 | 0 | 0 | 0 | 5 | 111232.36 | 80 | PMS | R3 |  |  |  |  |  |  |
| I07P223001C0 |  | IC-07 ; 1st Fix, Inst. of Supports for MEP (PAT RM-2) | 24d | 2011-05-16 A | 2011-05-29 A | I07S207807C0 | 100% |  | 2011-07-05 | 2011-08-02 |  |  | MECHANICAL [577.2 h]; Cost [32540.2 AED] | 32,540.18 | 32,540.18 |  |  | I07P223001C0 | IC | C |  | 07 | P2 | ME | 230 | 01 | BILL 8 | B08 | S2 | 1F | R00 | ACF04 | 230 |  | 1S | MEP |  |  |  |  | 100 |  |  | M1F |  |  |  |  |  |  |  |
| I07P226001C0 |  | IC-07 ; 1st Fix, Inst of Trunking/Conduiting (PAT RM-2) | 90d | 2011-06-01 A | 2011-10-10 | I07P223001C0, I07S207807C0 | 90% | 9d | 2011-06-01 | 2011-09-18 | 66.6d | 0d | ELECTRICAL [397.2 h]; Cost [20466.7 AED] | 20,466.68 | 18,420.01 |  |  | I07P226001C0 | IC | C |  | 07 | P2 | ME | 260 | 01 | BILL 8 | B08 | S2 | 1F | R00 | ACF04 | 260 |  | 1S | MEP | 0 | 0 | 0 | 0 |  | 7127.02 |  | M1F |  | 20 | 45 |  |  |  |  |
| I07P209203C0 |  | IC-07 ; Partitions 1st face (PAT RM-2) | 75d | 2011-06-15 A | 2012-01-09 | I07P209201C0 | 45% | 41.25d | 2011-06-15 | 2011-09-14 | 42.75d | 21.75d | PARTITIONS [316 m]; PARTITIONS [2402 h]; Cost |  |  | 314 | 945 | I07P209203C0 | IC | C |  | 07 | P2 | PT | 092 | 03 | BILL 8 | B08 | S2 | 2F | R00 | ACF06 | 092 |  |  | GP | 0 | 0 | 0 | 0 |  | 22246.47 | 45 | P1F |  |  |  | 25 | 20 |  |  |
| I07P222011C0 |  | IC-07 ; 2nd Fix, Drainage/Water pipe (wall) (PAT RM-2) | 66d | 2011-06-15 A | 2012-01-30 | I07P209201C0 | 10% | 59.4d | 2011-06-15 | 2011-09-04 | 24.6d | 0d | PLUMBING [891.6 h]; Cost [34080.3 AED] | 34,080.3 | 3,408.03 |  |  | I07P222011C0 | IC | C |  | 07 | P2 | ME | 220 | 11 | BILL 8 | B08 | S2 | 2F | R00 | ACF07 | 220 |  | 2n | MEP |  |  |  |  |  | 11315.07 |  |  |  | 10 | 10 |  |  |  |  |
| I07P227010C0 |  | IC-07 ; 1st Fix, Inst of Trunking for ELV system (PAT RM-2) | 108d | 2011-06-15 A | 2011-10-19 | I07P223001C0, I07P226001C0 SS+12d, I07S207807C0 | 85% | 16.2d | 2011-06-15 | 2011-10-23 | 66.6d | 0d | ELECTRICAL [914.4 h]; Cost [47960 AED] | 47,960.04 | 40,766.03 |  |  | I07P227010C0 | IC | C |  | 07 | P2 | ME | 270 | 10 | BILL 8 | B08 | S2 | 1F | R00 | ACF04 | 270 |  | 1S | MEP | 0 | 0 | 0 | 0 |  | 13911.7 |  | M1F |  | 10 | 45 | 65 | 45 |  |  |
| I07P222019C0 |  | IC-07 ; 1st Fix, Inst of Drainage pipe (ceiling) (PAT RM-2) | 108d | 2011-06-26 A | 2011-11-23 | I07P223001C0, I07P226013C0 SS+14d | 60% | 43.2d | 2011-07-14 | 2011-11-23 | 66.6d | 0d | PLUMBING [630 h]; Cost [34080.3 AED] | 34,080.3 | 20,448.18 |  |  | I07P222019C0 | IC | C |  | 07 | P2 | ME | 220 | 19 | BILL 8 | B08 | S2 | 1F | R00 | ACF04 | 220 |  | 1S | MEP | 0 | 0 | 0 | 0 |  | 19753.63 | 60 | M1F |  | 65 | 50 | 60 | 50 |  |  |
| I07P221111C0 |  | IC-07 ; 1st Fix, Inst of Sprinkler main pipe (PAT RM-2) | 150d | 2011-06-27 A | 2011-10-26 | I07P222005C0 SS+12d, I07P223001C0 | 85% | 22.5d | 2011-08-09 | 2012-02-11 | 66.6d | 24.6d | MECHANICAL [264 h]; Cost [14398.4 AED] | 14,398.38 | 12,238.62 |  |  | I07P221111C0 | IC | C |  | 07 | P2 | ME | 211 | 11 | BILL 8 | B08 | S2 | 1F | R00 | ACF04 | 211 |  | 1S | MEP | 0 | 0 | 0 | 0 |  | 4178.23 | 85 | M1F |  | 55 | 50 | 85 | 50 |  |  |
| I07P226013C0 |  | IC-07 ; 1st Fix, Inst of Cable Tray (PAT RM-2) | 53d | 2011-06-27 A | 2011-07-31 A | I07P223001C0, I07P227010C0 SS+10d, I07S207807C0 | 100% |  | 2011-06-27 | 2011-08-29 |  |  | ELECTRICAL [205.2 h]; Cost [11036 AED] | 11,035.96 | 11,035.96 |  |  | I07P226013C0 | IC | C |  | 07 | P2 | ME | 260 | 13 | BILL 8 | B08 | S2 | 1F | R00 | ACF04 | 260 |  | 1S | MEP |  |  |  |  |  | 5124 |  | M1F |  | 35 | 100 |  |  |  |  |
| I07P221117C0 |  | IC-07 ; 1st Fix, Inst of Sprinkler branch pipe (PAT RM-2) | 108d | 2011-07-10 A | 2012-01-02 | I07P209201C0, I07P221111C0, I07P205503C0 FF+18d | 80% | 21.6d | 2011-09-15 | 2012-01-26 | 96d | 75d | MECHANICAL [609.6 h]; Cost [33303.7 AED] | 33,303.68 | 26,642.94 |  |  | I07P221117C0 | IC | C |  | 07 | P2 | ME | 211 | 17 | BILL 8 | B08 | S2 | 1F | R00 | ACF04 | 211 |  | 1S | MEP | 0 | 0 | 0 | 0 |  |  | 80 | M1F |  | 35 | 40 | 75 | 40 |  |  |
| I07P222005C0 |  | IC-07 ; 1st Fix, Inst of Water supply pipe (ceiling) (PAT RM-2) | 72d | 2011-07-10 A | 2011-11-14 | I07P222019C0 SS+10d, I07P223001C0 | 50% | 36d | 2011-07-20 | 2011-10-15 | 66.6d | 0d | PLUMBING [1670.4 h]; Cost [90220.7 AED] | 90,220.67 | 45,110.33 |  |  | I07P222005C0 | IC | C |  | 07 | P2 | ME | 220 | 05 | BILL 8 | B08 | S2 | 1F | R00 | ACF04 | 220 |  | 1S | MEP | 0 | 0 | 0 | 0 |  |  | 30 | M1F |  | 30 | 5 | 20 | 5 |  |  |
| I07P223017C0 |  | IC-07 ; 1st Fix, Inst of CHW pipe (PAT RM-2) | 84d | 2011-07-10 A | 2012-01-02 | I07P221111C0 SS+14d, I07P223001C0, I07P205503C0 FF+18d | 40% | 50.4d | 2011-08-16 | 2011-11-29 | 42d | 0d | MECHANICAL [2832 h]; Cost [154640 AED] | 154,640.47 | 61,856.19 |  |  | I07P223017C0 | IC | C |  | 07 | P2 | ME | 230 | 17 | BILL 8 | B08 | S2 | 1F | R00 | ACF04 | 230 |  | 1S | MEP | 0 | 0 | 0 | 0 |  |  | 40 | M1F |  | 15 | 20 | 30 | 20 |  |  |
| I07P223023C0 |  | IC-07 ; 1st Fix, Inst of Main Ducting (PAT RM-2) | 90d | 2011-07-10 A | 2011-12-15 | I07P223001C0, I07P223017C0 SS+10d | 60% | 36d | 2011-08-28 | 2011-12-19 | 62.4d | 0d | MECHANICAL [7574.4 h]; Cost [413624 AED] | 413,624.26 | 248,174.56 |  |  | I07P223023C0 | IC | C |  | 07 | P2 | ME | 230 | 23 | BILL 8 | B08 | S2 | 1F | R00 | ACF04 | 230 |  | 1S | MEP | 0 | 0 | 0 | 0 |  |  |  | M1F |  | 30 | 20 | 40 | 20 |  |  |
| I07P223008C0 |  | IC-07 ; 1st Fix, Inst of VCD's/FD's (PAT RM-2) | 48d | 2011-09-05 A | 2012-02-06 | I07P223023C0, I07P205503C0 FF+18d | 10% | 43.2d | 2011-11-03 | 2012-01-04 | 67.2d | 46.2d | MECHANICAL [910.8 h]; Cost [49161.7 AED] | 49,161.67 | 4,916.17 |  |  | I07P223008C0 | IC | C |  | 07 | P2 | ME | 230 | 08 | BILL 8 | B08 | S2 | 1F | R00 | ACF04 | 230 |  | 1S | MEP |  |  |  |  |  |  |  | M1F |  | 20 |  |  |  | zero |  |
| I07P227001C0 |  | IC-07 ; 1st Fix, Wiring/ Cabling work (PAT RM-2) | 48d | 2011-10-19 | 2011-12-20 | I07P226001C0, I07P226013C0, I07P227010C0 |  |  |  |  | 136.8d | 115.8d | ELECTRICAL [213.6 h]; Cost |  |  |  |  | I07P227001C0 | IC | C |  | 07 | P2 | ME | 270 | 01 | BILL 8 | B08 | S2 | 1F | R00 | ACF04 | 270 |  | 1S | MEP |  |  |  |  |  |  |  | M1F |  | 20 |  |  |  | zero |  |
| I07P222007C0 |  | IC-07 ; 1st Fix, Inst of Medical Gas pipe (PAT RM-2) | 48d | 2011-11-19 | 2012-01-16 | I07P221111C0 SS+14d, I07P223001C0, I07P209201C0 |  |  |  |  | 36d | 0d | PLUMBING [328.8 h]; Cost |  |  |  |  | I07P222007C0 | IC | C |  | 07 | P2 | ME | 220 | 07 | BILL 8 | B08 | S2 | 1F | R00 | ACF04 | 220 |  | 1S | MEP |  |  |  |  |  |  |  | M1F |  | 10 |  |  |  | zero |  |
| I07P222015C0 |  | IC-07 ; 2nd Fix, Medical Gas pipe (PAT RM-2) | 48d | 2011-11-19 | 2012-01-16 | I07P209201C0, I07P222007C0 SS |  |  |  |  | 36d | 11.4d | PLUMBING [589.2 h]; Cost |  |  |  |  | I07P222015C0 | IC | C |  | 07 | P2 | ME | 220 | 15 | BILL 8 | B08 | S2 | 2F | R00 | ACF07 | 220 |  | 2n | MEP |  |  |  |  |  |  |  |  |  |  |  |  |  |  |  |
| I07P226009C0 |  | IC-07 ; 2nd Fix, Inst of Wall conduites (PAT RM-2) | 48d | 2011-11-19 | 2012-01-16 | I07P209201C0 |  |  |  |  | 36d | 11.4d | ELECTRICAL [1036.8 h]; Cost |  |  |  |  | I07P226009C0 | IC | C |  | 07 | P2 | ME | 260 | 09 | BILL 8 | B08 | S2 | 2F | R00 | ACF07 | 260 |  | 2n | MEP |  |  |  |  |  |  |  |  |  | 20 |  |  |  | zero |  |
| I07P205503C0 |  | IC-07 ; Ceiling Support for medical equipment (PAT RM-2) | 15d | 2011-11-22 | 2011-12-11 | I07P209201C0, IAFCI22001R20 FS+65d |  |  |  |  | 42d | 0d | SECONDARY STEEL [163 h]; STRUCTURAL STEEL [17 T(Fe)]; Cost |  |  | 335 | 962 | D03EY05503C0 | IC | C |  | 07 | P2 | SW | 055 | 03 | BILL 8 | B08 | S2 | 03 | R00 | ACF03 | b |  |  |  |  |  |  |  |  |  |  |  |  |  |  |  |  |  |  |
| I07P208103C0 |  | IC-07 ; Door Frames (PAT RM-2) | 36d | 2011-12-19 | 2012-01-30 | I07P209201C0, GNHE08101C0 FS+69d, I07P108103C0 SS+3d |  |  |  |  | 58.75d | 0d | ASSORTED DOORS [162 h]; Cost |  |  | 316 | 947 | I07P208103C0 | IC | C | 08 | 07 | P2 | DO | 081 | 03 | BILL 8 | B08 | S2 | DF | R00 | ACF06 | 081 |  |  |  |  |  |  |  |  |  |  |  |  |  |  |  |  |  |  |
| I07P223009C0 |  | IC-07 ; 2nd Fix, Inst of VAV'S CHW connection (PAT RM-2) | 42d | 2012-01-03 | 2012-02-21 | I07P223017C0 |  |  |  |  | 42d | 0d | MECHANICAL [1722 h]; Cost |  |  |  |  | I07P223009C0 | IC | C |  | 07 | P2 | ME | 230 | 09 | BILL 8 | B08 | S2 | 2F | R00 | ACF07 | 230 |  | 2n | MEP |  |  |  |  |  |  |  |  |  | 20 |  |  |  | zero |  |
| I07P205511C0 |  | IC-07 ; Wall reinforcement for MEP/Medical (PAT RM-2) | 24d | 2012-01-07 | 2012-02-02 | I07P209201C0, IAFCI22001R02 FS+65d |  |  |  |  | 21d | 0d | SECONDARY STEEL [50 h]; Cost |  |  |  |  | I07P205511C0 | IC | C |  | 07 | P2 | SW | 055 | 11 | BILL 8 | B08 | S2 | 03 | R00 | ACF03 | b |  |  |  |  |  |  |  |  |  |  |  |  |  |  |  |  |  |  |
| I07P201005C0 |  | IC-07 ; 2nd, Wall Inspection by Consultant (PAT RM-2) | 0d | 2012-01-30 | 2012-01-30 | I07P222011C0, I07P222015C0, I07P226009C0 |  |  |  |  | 24.6d | 3.6d | Cost |  |  |  |  | I07P201005C0 | IC | C |  | 07 | P2 | ME | 010 | 05 | BILL 8 | B08 | S2 | WI | R00 | ACF07 | 010 |  | 2n | MEP |  |  |  |  |  |  |  |  |  |  |  |  |  |  |  |
| I07P209205C0 |  | IC-07 ; Partitions Closing (PAT RM-2) | 48d | 2012-02-05 | 2012-03-31 | I07P201005C0, I07P205511C0, I07P209203C0, I07P222005C0, I07P222019C0, IAFOA09210C1 FF, I07P208103C0 FF, I07P221117C0 FF, I07P223008C0 FF, IAFCI22001R20 FS+65d, I07P223023C0 |  |  |  |  | 21d | 0d | PARTITIONS [316 m]; PARTITIONS [3074 h]; Cost |  |  | 315 | 946 | I07P209205C0 | IC | C |  | 07 | P2 | PT | 092 | 05 | BILL 8 | B08 | S2 | FF | R00 | ACF06 | 092 |  |  | GP |  |  |  |  |  |  |  | P2F | R3 |  |  |  |  |  |  |
| I07P223015C0 |  | IC-07 ; 2nd Fix, Insulation of CHW pipe & Duct (PAT RM-2) | 42d | 2012-02-22 | 2012-04-10 | I07P223009C0, I07P223017C0, I07P223023C0 |  |  |  |  | 42d | 21d | MECHANICAL [3896.4 h]; Cost |  |  |  |  | I07P223015C0 | IC | C |  | 07 | P2 | ME | 230 | 15 | BILL 8 | B08 | S2 | 2F | R00 | ACF07 | 230 |  | 2n | MEP |  |  |  |  |  |  |  |  |  |  |  |  |  |  |  |
| I07P207103C0 |  | IC-07 ; Waterproofing (PAT RM-2) | 12d | 2012-04-01 | 2012-04-14 | I07P208103C0, I07P209205C0 |  |  |  |  | 105d | 0d | THERMAL & MOISTURE [96 h]; THERMAL & MOISTURE [601 m2]; Cost |  |  | 105 | 999 | I07P207103C0 | IC | C |  | 07 | P2 | FF | 071 | 03 | BILL 8 | B08 | S2 | 01 | R00 | ACF03 | 071 |  |  |  |  |  |  |  |  |  |  |  |  |  |  |  |  |  |  |
| I07P209901C0 |  | IC-07 ; Wall Prime & 1st coat (PAT RM-2) | 30d | 2012-04-01 | 2012-05-05 | I07P209205C0 |  |  |  |  | 21d | 0d | WALL PAINT [579 h]; WALL PAINT [721 m2]; Cost |  |  | 328 | 956 | I07P209901C0 | IC | C |  | 07 | P2 | PA | 099 | 01 | BILL 8 | B08 | S2 | 01 | R00 | ACF06 | 099 |  |  |  |  |  |  |  |  |  |  |  |  |  |  |  |  |  |  |
| I07P226005C0 |  | IC-07 ; 2nd Fix, Wiring for Power/Lighting/Emergency (PAT RM-2) | 48d | 2012-04-01 | 2012-05-26 | I07P209205C0 |  |  |  |  | 129d | 0d | ELECTRICAL [853.2 h]; Cost |  |  |  |  | I07P226005C0 | IC | C |  | 07 | P2 | ME | 260 | 05 | BILL 8 | B08 | S2 | 2F | R00 | ACF07 | 260 |  | 2n | MEP |  |  |  |  |  |  |  |  |  |  |  |  |  |  |  |
| I07P226007C0 |  | IC-07 ; 2nd Fix, Cable Pulling (PAT RM-2) | 54d | 2012-04-01 | 2012-06-02 | I07P209201C0 SS+6d, I07P209205C0 |  |  |  |  | 129d | 108d | ELECTRICAL [3498 h]; Cost |  |  |  |  | I07P226007C0 | IC | C |  | 07 | P2 | ME | 260 | 07 | BILL 8 | B08 | S2 | 2F | R00 | ACF07 | 260 |  | 2n | MEP |  |  |  |  |  |  |  |  |  | 20 |  |  |  | zero |  |
| I07P226053C0 |  | IC-07 ; 2nd Fix, Wiring / Cabling (PAT RM-2) | 48d | 2012-04-01 | 2012-05-26 | I07P209203C0, I07P209205C0 |  |  |  |  | 135d | 114d | ELECTRICAL [853.2 h]; Cost |  |  | 389 | 977 | I07P226053C0 | IC | C |  | 07 | P2 | ME | 260 | 53 | BILL 8 | B08 | S2 | 2F | R00 | ACF07 | 260 |  | 2n | MEP |  |  |  |  |  |  |  |  |  |  |  |  |  |  |  |
| I07P226011C0 |  | IC-07 ; 2nd Fix, Inst of Equipment (DB) (PAT RM-2) | 66d | 2012-04-12 | 2012-06-28 | I07P209205C0, I07P126011C0 SS+3d |  |  |  |  | 42.25d | 0d | ELECTRICAL [1887.6 h]; Cost |  |  |  |  | I07P226011C0 | IC | C |  | 07 | P2 | ME | 260 | 11 | BILL 8 | B08 | S2 | 2F | R00 | ACF04 | 260 |  | 2n | MEP |  |  |  |  |  |  |  |  |  |  |  |  |  |  | E |
| I07P209305C0 |  | IC-07 ; Ceramic floor tile (PAT RM-2) | 24d | 2012-04-15 | 2012-05-12 | I07P207103C0 |  |  |  |  | 105d | 0d | CERAMIC FLOOR TILES [72 h]; CERAMIC FLOOR TILES [39 m2]; Cost |  |  | 106 | 1000 | I07P209305C0 | IC | C |  | 07 | P2 | FF | 093 | 05 | BILL 8 | B08 | S2 | 02 | R00 | ACF06 | CT |  |  |  |  |  |  |  |  |  |  |  |  |  |  |  |  |  |  |
| I07P205501C0 |  | IC-07 ; Handrails & balustrade (PAT RM-2) | 33.5d | 2012-05-06 | 2012-06-13 | I07P209901C0 |  |  |  |  | 23.5d | 2.5d | SECONDARY STEEL [263 h]; Cost |  |  |  |  | I07P205501C0 | IC | C |  | 07 | P2 | SW | 055 | 01 | BILL 8 | B08 | S2 | 01 | R00 | ACF03 | a |  |  |  |  |  |  |  |  |  |  |  |  |  |  |  |  |  |  |
| I07P209501C0 |  | IC-07 ; Ceiling Grid and Service Tile (PAT RM-2) | 36d | 2012-05-06 | 2012-06-17 | I07P205503C0, I07P209205C0, I07P221117C0, I07P223008C0, I07P223009C0, I07P223015C0, I07P227001C0, IAFCI22002R02 FS+65d, I07P209901C0 |  |  |  |  | 21d | 0d | CEILING GRID FOR GYPSUM [1504.83 h]; CEILING GRID FOR GYPSUM [128.64 m2]; Cost |  |  | 323 | 952 | I07P209501C0 | IC | C |  | 07 | P2 | CE | 095 | 01 | BILL 8 | B08 | S2 | 01 | R00 | ACF06 | 095 |  |  |  |  |  |  |  |  |  |  |  |  |  |  |  |  |  |  |
| I07P209510C0 |  | IC-07 ; Patient Lift Ceiling Rail (by others) (PAT RM-2) | 0d | 2012-05-06 | 2012-05-06 | I07P209501C0 SS |  |  |  |  | 153d | 132d | Cost |  |  | 323 | 952 | I06P109501C0 | IC | C |  | 07 | P2 | CE | 095 | 10 | BILL 8 | B08 | S2 | 02 | R00 | ACF06 | 095 |  |  |  |  |  |  |  |  |  |  |  |  |  |  |  |  |  |  |
| I07P222025C0 |  | IC-07 ; Final Fix, Inst of Sanitary Ware (PAT RM-2) | 36d | 2012-05-13 | 2012-06-24 | I07P209205C0, I07P209305C0, A10230 FS+148d |  |  |  |  | 105d | 0d | PLUMBING [1315.2 h]; Cost |  |  |  |  | I07P222025C0 | IC | C |  | 07 | P2 | ME | 220 | 25 | BILL 8 | B08 | S2 | FF | R00 | ACF07 | 220 |  | FF | MEP |  |  |  |  |  |  |  |  |  |  |  |  |  |  |  |
| I07P226015C0 |  | IC-07 ; Final Fix, Termination & Gladding of Cables (PAT RM-2) | 36d | 2012-05-27 | 2012-07-08 | I07P226005C0 |  |  |  |  | 129d | 108d | ELECTRICAL [158.4 h]; Cost |  |  |  |  | I07P226015C0 | IC | C |  | 07 | P2 | ME | 260 | 15 | BILL 8 | B08 | S2 | FF | R00 | ACF07 | 260 |  | FF | MEP |  |  |  |  |  |  |  |  |  |  |  |  |  |  |  |
| I07P209202C0 |  | IC-07 ; Rolling Shade (PAT RM-2) | 30d | 2012-06-18 | 2012-07-22 | I07P209501C0 |  |  |  |  | 129d | 108d | PARTITIONS [839 h]; Cost |  |  | 313 | 944 | I06P109201C0 | IC | C |  | 07 | P2 | FI | 092 | 02 | BILL 8 | B08 | S2 | 02 | R00 | ACF06 | 092 |  |  | GP |  |  |  |  |  |  |  |  |  |  |  |  |  |  |  |
| I07P209601C0 |  | IC-07 ; Flooring (Rubber,Terrazzo) (PAT RM-2) | 42d | 2012-06-18 | 2012-08-05 | I07P209501C0, I07P205501C0 |  |  |  |  | 21d | 0d | TERRAZO FLOOR [584 h]; TERRAZO FLOOR [324 m2]; RUBBER FLOOR [207 m2]; RUBBER FLOOR [88 h]; Cost |  |  | 326 | 955 | I07P209601C0 | IC | C |  | 07 | P2 | FF | 096 | 01 | BILL 8 | B08 | S2 | 01 | R00 | ACF06 | RF |  |  |  |  |  |  |  |  |  |  |  |  |  |  |  |  |  |  |
| I07P209903C0 |  | IC-07 ; Wall Final Paint (PAT RM-2) | 30d | 2012-06-18 | 2012-07-22 | I07P209901C0, I07P209905C0, I07P209501C0 |  |  |  |  | 129d | 78d | WALL PAINT [311 h]; WALL PAINT [388 m2]; Cost |  |  | 329 | 957 | I07P209903C0 | IC | C |  | 07 | P2 | PA | 099 | 03 | BILL 8 | B08 | S2 | 02 | R00 | ACF06 | 099 |  |  |  |  |  |  |  |  |  |  |  |  |  |  |  |  |  |  |
| I07P209905C0 |  | IC-07 ; Ceiling Prime & 1st coat (PAT RM-2) | 0d | 2012-06-18 | 2012-06-18 | I07P209501C0 |  |  |  |  | 129d | 0d | Cost |  |  | 330 | 958 | I07P209905C0 | IC | C |  | 07 | P2 | PA | 099 | 05 | BILL 8 | B08 | S2 | 01 | R00 | ACF06 | 099 |  |  |  |  |  |  |  |  |  |  |  |  |  |  |  |  |  |  |
| I07P221115C0 |  | IC-07 ; 2nd Fix, Inst of Sprinkler droppers (PAT RM-2) | 48d | 2012-06-18 | 2012-08-12 | I07P209501C0 |  |  |  |  | 69d | 0d | MECHANICAL [1032 h]; Cost |  |  |  |  | I07P221115C0 | IC | C |  | 07 | P2 | ME | 211 | 15 | BILL 8 | B08 | S2 | 2F | R00 | ACF07 | 211 |  | 2n | MEP |  |  |  |  |  |  |  |  |  |  |  |  |  |  |  |
| I07P223021C0 |  | IC-07 ; 2nd Fix, Inst of Flexible Duct & Plenum boxes (PAT RM-2) | 48d | 2012-06-18 | 2012-08-12 | I07P209205C0, I07P209501C0 |  |  |  |  | 69d | 0d | MECHANICAL [892.8 h]; Cost |  |  |  |  | I07P223021C0 | IC | C |  | 07 | P2 | ME | 230 | 21 | BILL 8 | B08 | S2 | 2F | R00 | ACF07 | 230 |  | 2n | MEP |  |  |  |  |  |  |  |  |  |  |  |  |  |  |  |
| I07P226017C0 |  | IC-07 ; Final Fix, Inst of Ceiling rose (PAT RM-2) | 36d | 2012-06-18 | 2012-07-29 | I07P209501C0 |  |  |  |  | 57d | 0d | ELECTRICAL [33.6 h]; Cost |  |  |  |  | I07P226017C0 | IC | C |  | 07 | P2 | ME | 260 | 17 | BILL 8 | B08 | S2 | FF | R00 | ACF07 | 260 |  | FF | MEP |  |  |  |  |  |  |  |  |  |  |  |  |  |  |  |
| I07P227002C0 |  | IC-07 ; 2nd Fix, Wiring Droppers (PAT RM-2) | 48d | 2012-06-18 | 2012-08-12 | I07P209501C0 |  |  |  |  | 69d | 0d | ELECTRICAL [853.2 h]; Cost |  |  |  |  | I07P227002C0 | IC | C |  | 07 | P2 | ME | 270 | 02 | BILL 8 | B08 | S2 | 2F | R00 | ACF07 | 270 |  | 2n | MEP |  |  |  |  |  |  |  |  |  |  |  |  |  |  |  |
| I07P227020C0 |  | IC-07 ; 2nd Fix, Inst of ELV Equipment (Panels) (PAT RM-2) | 60d | 2012-06-18 | 2012-08-28 | I07P209205C0, I07P209501C0 |  |  |  |  | 57d | 18d | ELECTRICAL [1214.4 h]; Cost |  |  |  |  | I07P227020C0 | IC | C |  | 07 | P2 | ME | 270 | 20 | BILL 8 | B08 | S2 | 2F | R00 | ACF04 | 270 |  | 2n | MEP |  |  |  |  |  |  |  |  |  |  |  |  |  |  | E |
| I07P221113C0 |  | IC-07 ; Final Fix, Inst of Sprinklers head/ Extinguisher (PAT RM-2) | 36d | 2012-06-25 | 2012-08-05 | I07P209501C0, I07P221115C0 SS+6d |  |  |  |  | 75d | 48.5d | MECHANICAL [152.4 h]; Cost |  |  |  |  | I07P221113C0 | IC | C |  | 07 | P2 | ME | 211 | 13 | BILL 8 | B08 | S2 | FF | R00 | ACF07 | 211 |  | FF | MEP |  |  |  |  |  |  |  |  |  |  |  |  |  |  |  |
| I07P222021C0 |  | IC-07 ; Final Fix, Terminate Sanitary Ware & Appliances (PAT RM-2) | 36d | 2012-06-25 | 2012-08-05 | I07P222011C0, I07P222025C0 |  |  |  |  | 105d | 84d | PLUMBING [1315.2 h]; Cost |  |  |  |  | I07P222021C0 | IC | C |  | 07 | P2 | ME | 220 | 21 | BILL 8 | B08 | S2 | FF | R00 | ACF07 | 220 |  | FF | MEP |  |  |  |  |  |  |  |  |  |  |  |  |  |  |  |
| I07P223019C0 |  | IC-07 ; Final Fix, Inst of Grilles & Diffusers (PAT RM-2) | 36d | 2012-06-25 | 2012-08-05 | I07P209501C0, I07P223021C0 SS+6d |  |  |  |  | 75d | 48.5d | MECHANICAL [757.2 h]; Cost |  |  |  |  | I07P223019C0 | IC | C |  | 07 | P2 | ME | 230 | 19 | BILL 8 | B08 | S2 | FF | R00 | ACF07 | 230 |  | FF | MEP |  |  |  |  |  |  |  |  |  |  |  |  |  |  |  |
| I07P226003C0 |  | IC-07 ; Final Fix, Inst of Light fittings (PAT RM-2) | 54d | 2012-06-25 | 2012-08-28 | I07P209501C0, I07P226017C0 SS+6d |  |  |  |  | 57d | 30.5d | ELECTRICAL [9577.2 h]; Cost |  |  |  |  | I07P226003C0 | IC | C |  | 07 | P2 | ME | 260 | 03 | BILL 8 | B08 | S2 | FF | R00 | ACF07 | 260 |  | FF | MEP |  |  |  |  |  |  |  |  |  |  |  |  |  |  |  |
| I07P227030C0 |  | IC-07 ; Final Fix, Inst of ELV device (Detector/Speaker) (PAT RM-2) | 36d | 2012-06-25 | 2012-08-05 | I07P209501C0, I07P227002C0 SS+6d |  |  |  |  | 75d | 48.5d | ELECTRICAL [1707.6 h]; Cost |  |  |  |  | I07P227030C0 | IC | C |  | 07 | P2 | ME | 270 | 30 | BILL 8 | B08 | S2 | FF | R00 | ACF07 | 270 |  | FF | MEP |  |  |  |  |  |  |  |  |  |  |  |  |  |  |  |
| I07P206101C0 |  | IC-07 ; Wood / caseworks (PAT RM-2) | 54d | 2012-08-06 | 2012-10-09 | I07CO04405C0, I07P209501C0, I07P209601C0, I07P209901C0, IAFWA00103M0, IAFCI22002R02 FS+184d |  |  |  |  | 21d | 0d | WOOD WORK/CASEWORK [181.51 no]; WOOD WORK/CASEWORK [1456 h]; Cost |  |  | 332 | 960 | I07P206101C0 | IC | C |  | 07 | P2 | WO | 061 | 01 | BILL 8 | B08 | S2 | WW | R00 | ACF06 | 061 | R3 |  |  |  |  |  |  |  |  |  |  |  |  |  |  |  |  |  |

| ID | WBS | Activity | Duration | Start | Finish | Predecessors | Complete | Remaining | Planned start | Planned finish | Total float | Free float | Resources | Cost | Actual cost | Change Order # | NEW ACTIVITY ID | change id | CCAD BUILDING(SET) | CCAD PHASE(SET) | CCAD FLOOR(SET) | CCAD ZONE(SET) | CCAD WORK(SET) | CCAD SECTION(SET) | CCAD SERIAL No.(SET) | CCAD CBS(SET) | CCAD BILL(SET) | CCAD HANDOVER(SET) | CCAD TAG(SET) | CCAD REV(SET) | CCADACF (SET) | CCAD SSCF | R3 Finish | CCAD DIVISION(SET) | CCAD SUB ZONE MEP(SET) | CCAD CSA | Claimed This Month | Act Selector % | user_number8 | user_integer1 | user_integer2 | user_number7 | U% | CCAD MEQ | July2011 Target% Complete | FILTER | IDDD |
| --- | --- | --- | --- | --- | --- | --- | --- | --- | --- | --- | --- | --- | --- | --- | --- | --- | --- | --- | --- | --- | --- | --- | --- | --- | --- | --- | --- | --- | --- | --- | --- | --- | --- | --- | --- | --- | --- | --- | --- | --- | --- | --- | --- | --- | --- | --- | --- |
| I07P206102C0 |  | IC-07 ; Head/Foot Wall (PAT RM-2) | 30.5d | 2012-08-06 | 2012-09-12 | I07P209501C0, IAFWA00103M0, IAFCI22002R02 FS+184d, I07P206101C0 SS, IV10AF08109R2 FF |  |  |  |  | 26.5d | 0d | WOOD WORK/CASEWORK [1479 h]; Cost |  |  | 332 | 960 | I07P206102C0 | IC | C | 07 | P2 | WO | 061 | 02 | BILL 8 | B08 | S2 | WW | R00 | ACF06 | 061 | R3 |  |  |  |  |  |  |  |  |  |  |  |  |  |  |
| I07P208107C0 |  | IC-07 ; Doors (PAT RM-2) | 36d | 2012-08-06 | 2012-09-18 | I07P208103C0, I07P209501C0, I07P209601C0, I07P209901C0 |  |  |  |  | 61d | 0d | ASSORTED DOORS [510 h]; ASSORTED DOORS [51 no]; Cost |  |  | 317 | 948 | I07P208107C0 | IC | C | 07 | P2 | DO | 081 | 07 | BILL 8 | B08 | S2 | DR | R00 | ACF06 | 081 |  | 08 |  |  |  |  |  |  |  |  |  |  |  |  |  |
| I07P209701C0 |  | IC-07 ; Wall finishes (ST, WD, WC) (PAT RM-2) | 36d | 2012-08-06 | 2012-09-18 | I07P226011C0, I07P227020C0 FF, IAFCI22002R02 FS+164d, I07P209601C0 |  |  |  |  | 39d | 0d | ASSORTED WALL FINISH [307 h]; ASSORTED WALL FINISH [352 m2]; Cost |  |  | 105 | 1002 | I07P209701C0 | IC | C | 07 | P2 | WF | 097 | 01 | BILL 8 | B08 | S2 | 01 | R00 | ACF06 | 097 | R3 |  |  |  |  |  |  |  |  |  |  |  |  |  |  |
| I07P222029C0 |  | IC-07 ; Final Fix, Medical Gas pipe (PAT RM-2) | 18d | 2012-09-12 | 2012-10-03 | I07P209501C0, I07P206102C0 |  |  |  |  | 26.5d | 0d | PLUMBING [328.8 h]; Cost |  |  |  |  | I07P222029C0 | IC | C | 07 | P2 | ME | 220 | 29 | BILL 8 | B08 | S2 | FF | R00 | ACF07 | 220 |  |  | FF | MEP |  |  |  |  |  |  |  |  |  |  |  |
| I07P208709C0 |  | IC-07 ; Ironmongery (PAT RM-2) | 20d | 2012-09-19 | 2012-10-11 | I07P208107C0, IV10AF08106R2 FF |  |  |  |  | 61d | 40d | IRONMONGERY [240 h]; IRONMONGERY [24 no]; Cost |  |  | 322 | 951 | I07P208709C0 | IC | C | 07 | P2 | DO | 087 | 09 | BILL 8 | B08 | S2 | IM | R00 | ACF06 | 087 |  | 08 |  |  |  |  |  |  |  |  |  |  |  |  |  |
| I07P211001C0 |  | IC-07 ; Wall Protection (WP, CG, WG, FCG) (PAT RM-2) | 24d | 2012-09-19 | 2012-10-16 | I07P209701C0, I07P209903C0 SS |  |  |  |  | 57d | 36d | FF&E [37 h]; Cost |  |  | 326 | 1001 | I07P211001C0 | IC | C | 07 | P2 | WF | 110 | 01 | BILL 8 | B08 | S2 | 03 | R00 | ACF08 | b |  |  |  |  |  |  |  |  |  |  |  |  |  |  |  |
| I07P201006C0 |  | IC-07 ; 2nd, Ceiling Inspection by Consultants (PAT RM-2) | 0d | 2012-10-03 | 2012-10-03 | I07P221115C0, I07P223009C0, I07P223015C0, I07P227002C0, I07P209501C0, I07P221113C0, I07P222029C0, I07P223019C0, I07P226003C0, I07P226017C0, I07P227030C0 |  |  |  |  | 26.5d | 5.5d | Cost |  |  |  |  | I07P201006C0 | IC | C | 07 | P2 | ME | 010 | 06 | BILL 8 | B08 | S2 | CI | R00 | ACF07 | 010 |  |  | 2n | MEP |  |  |  |  |  |  |  |  |  |  |  |
| I07P209503C0 |  | IC-07 ; Ceiling closure - ACT/Gypsum (PAT RM-2) | 18d | 2012-10-10 | 2012-11-01 | I07P201006C0, I07P209510C0, I07P221115C0, I07P226005C0, I07P227001C0, I07P227002C0, IAFOA09509C1 FF, I07P206101C0, I07P209701C0, I07P223021C0, I07P226053C0, I07P226007C0, I07CO04455C0 |  |  |  |  | 21d | 0d | ASSORTED CEILING FINISH [308.73 h]; CEILING GYPSUM [42.23 h]; ASSORTED CEILING FINISH [502 m2]; CEILING GYPSUM [129 m2]; Cost |  |  | 324 | 953 | I07P209503C0 | IC | C | 07 | P2 | CE | 095 | 03 | BILL 8 | B08 | S2 | 02 | R00 | ACF06 | 095 |  |  |  |  |  |  |  |  |  |  |  |  |  |  |  |
| I07P209675C1 |  | IC-07, Carpet Tile Finish (Patient Room-2) | 0d | 2012-11-03 | 2012-11-03 | I07P209903C0 SS, I07P209907C0 SS |  |  |  |  | 45d | 23.75d | Cost |  |  |  |  |  | IC | C | 07 | P2 | FF | 096 |  |  | B08 |  |  | R00 | ACF06 | CPT |  |  |  | CPT |  |  |  |  |  |  |  |  |  |  |  |
| I07P209907C0 |  | IC-07 ; Ceiling Final paint (PAT RM-2) | 0d | 2012-11-03 | 2012-11-03 | I07P209601C0, I07P209905C0, I07P209503C0 |  |  |  |  | 45d | 0d | Cost |  |  | 331 | 959 | I07P209907C0 | IC | C | 07 | P2 | PA | 099 | 07 | BILL 8 | B08 | S2 | 02 | R00 | ACF06 | 099 |  |  |  |  |  |  |  |  |  |  |  |  |  |  |  |
| I07P211003C0 |  | IC-07 ; FF & E (PAT RM-2) | 12d | 2012-11-03 | 2012-11-17 | I07P209601C0, I07P206101C0, I07P209503C0 |  |  |  |  | 33d | 12d | FF&E [380 h]; FF&E [202.27 no]; Cost |  |  | 333 | 961 | I07P211003C0 | IC | C | 07 | P2 | WO | 110 | 03 | BILL 8 | B08 | S2 | 04 | R00 | ACF08 | a |  |  |  |  |  |  |  |  |  |  |  |  |  |  |  |
| I07P222027C0 |  | IC-07 ; Final Fix, Inst of All drain (PAT RM-2) | 12d | 2012-11-03 | 2012-11-17 | I07P209305C0, I07P209503C0 |  |  |  |  | 21d | 0d | PLUMBING [630 h]; Cost |  |  |  |  | I07P222027C0 | IC | C | 07 | P2 | ME | 220 | 27 | BILL 8 | B08 | S2 | FF | R00 | ACF07 | 220 |  |  | FF | MEP |  |  |  |  |  |  |  |  |  |  |  |
| I07P226019C0 |  | IC-07 ; Final Fix, Inst of Switch/Sockets (PAT RM-2) | 12d | 2012-11-03 | 2012-11-17 | I07P209901C0, I07P209503C0 |  |  |  |  | 21d | 0d | ELECTRICAL [164.4 h]; Cost |  |  |  |  | I07P226019C0 | IC | C | 07 | P2 | ME | 260 | 19 | BILL 8 | B08 | S2 | FF | R00 | ACF07 | 260 |  |  | FF | MEP |  |  |  |  |  |  |  |  |  |  |  |
|  | 10 | **Precommissioning Tesing & snagging (PAT RM-2)** |  | 2012-11-18 | 2012-12-24 |  |  |  |  |  |  |  |  |  |  |  |  |  |  |  |  |  |  |  |  |  |  |  |  |  |  |  |  |  |  |  |  |  |  |  |  |  |  |  |  |  |  |
| I07TS01805C0 |  | IC-07 ; MEP de-snag, FIREM sign-off | 12d | 2012-11-18 | 2012-12-01 | I07P222025C0, I07P222027C0, I07P226015C0, I07P222021C0, I07P221113C0, I07P223019C0, I07P222029C0, I07P226017C0, I07P226003C0, I07P227030C0, I07P226019C0 |  |  |  |  | 21d | 0d | TESTING & COMMISSIONING [510 h]; Cost |  |  |  |  | I07TS01801C0 | IC | C | 07 | TS | SC | 018 | 01 | BILL 8 | B08 | S2 | 01 | R00 | ACF07 | 018 |  |  |  |  |  |  |  |  |  |  |  |  |  |  |  |
| I07TS01809C0 |  | IC-07 ; Touch-up & Clean / JV inspection /CIR /De-snag | 18d | 2012-12-02 | 2012-12-23 | I07CO04401C0, I07CO04402C0, I07CO04403C0, I07CO04405C0, I07CO04406C0, I07P205501C0, I07P205511C0, I07P206101C0, I07P206102C0, I07P207103C0, I07P208103C0, I07P208107C0, I07P208709C0, I07P209201C0, I07P209202C0, I07P209203C0, I07P209205C0, I07P209305C0, I07P209501C0, I07P209503C0, I07P209510C0, I07P209601C0, I07P209701C0, I07P209901C0, I07P209903C0, I07P209905C0, I07P209907C0, I07P211001C0, I07P211003C0, I07P221113C0, I07P222021C0, I07P222025C0, I07P222027C0, I07P222029C0, I07P223019C0, I07P226003C0, I07P226015C0, I07P226017C0, I07P226019C0, I07P227030C0, I07TS01805C0 |  |  |  |  | 21d | 0d | TESTING & COMMISSIONING [128 h]; Cost |  |  |  |  | I07TS01802C0 | IC | C | 07 | TS | SC | 018 | 02 | BILL 8 | B08 | S2 | 02 | R00 | ACF07 | 018 |  |  |  |  |  |  |  |  |  |  |  |  |  |  |  |
| I07TS01813C0 |  | IC-07 ; Consultant's final de-snag inspection | 0d | 2012-12-24 | 2012-12-24 | I07TS01809C0 |  |  |  |  | 21d | 0d | Cost |  |  |  |  | I07TS01803C0 | IC | C | 07 | TS | SC | 018 | 03 | BILL 8 | B08 | S2 | 03 | R00 | ACF07 | 018 |  |  |  |  |  |  |  |  |  |  |  |  |  |  |  |
|  | 06 | **TR Room** |  | 2011-06-15 | 2012-09-18 |  |  |  |  |  |  |  |  |  |  |  |  |  |  |  |  |  |  |  |  |  |  |  |  |  |  |  |  |  |  |  |  |  |  |  |  |  |  |  |  |  |  |
| I07TR09201C0 |  | IC-07 ; Metal Studs (TR RM) | 6d | 2011-06-15 A | 2011-07-31 A | I07PA09201C0 SS | 100% |  | 2011-06-15 | 2011-06-22 |  |  | PARTITIONS [289 h]; PARTITIONS - Metal Studs [30 m]; Cost |  |  | 313 | 885 | I07TR09201C0 | IC | C | 07 | TR | PT | 092 | 01 | BILL 8 | B08 | S2 | 1F | R00 | ACF06 | 092 |  |  |  | GP | 11684.06 | PMS |  |  |  |  |  |  |  |  |  |
| I07TR09203C0 |  | IC-07 ; Partitions 1st face (TR RM) | 60d | 2011-07-10 A | 2011-11-29 | I07TR09201C0 SS+12d | 60% | 24d | 2011-07-04 | 2011-09-14 | 68d | 54d | PARTITIONS [30 m]; PARTITIONS [242 h]; Cost |  |  | 314 | 886 | I07TR09203C0 | IC | C | 07 | TR | PT | 092 | 03 | BILL 8 | B08 | S2 | 2F | R00 | ACF06 | 092 |  |  |  | GP |  | P1F | 0 | 0 | 0 | 0 | 60 |  |  |  |  |
| I07TR26009C0 |  | IC-07 ; 2nd Fix, Inst of Equipment (DB, TR, SG,BUS) (TR RM) | 36d | 2011-09-05 A | 2012-03-08 | I07TR09205C0 SS | 20% | 28.8d | 2012-01-02 | 2012-02-13 | 67.2d | 0d | ELECTRICAL [7132.8 h]; Cost [1588669 AED] | 1,588,669.12 | 317,733.82 |  |  | I07TR26009C0 | IC | C | 07 | TR | ME | 260 | 09 | BILL 8 | B08 | S2 | 2F | R00 | ACF04 | 260 |  |  | 2n | MEP |  |  |  |  |  |  |  | E |  |  |  |
| I07TR26026C0 |  | IC-07 ; 2nd Fix, Conduit (TR RM) | 36d | 2011-10-29 | 2011-12-14 | I07TR09201C0 |  |  |  |  | 56d | 0d | ELECTRICAL [1036.8 h]; Cost |  |  |  |  | I07TR26026C0 | IC | C | 07 | TR | ME | 260 | 26 | BILL 8 | B08 | S2 | 2F | R00 | ACF07 | 260 |  |  | 2n | MEP |  |  |  |  |  |  |  |  | 15 | zero |  |
| I07TR08101C0 |  | IC-07 ; Door Frames (TR RM) | 18d | 2011-11-01 | 2011-11-24 | I07TR09201C0, GNHE08101C0 FS+69d |  |  |  |  | 101d | 87d | ASSORTED DOORS [16 h]; Cost |  |  | 316 | 20001090 | I07TR08101C0 | IC | C | 07 | TR | DO | 081 | 01 | BILL 8 | B08 | S2 | DF | R00 | ACF06 | 081 |  | 08 |  |  |  |  |  |  |  |  |  |  |  |  |  |
| I07TR01005C0 |  | IC-07 ; 2nd, Wall Inspection by Consultant (TR RM) | 0d | 2011-12-15 | 2011-12-15 | I07TR26026C0 |  |  |  |  | 56d | 42d | Cost |  |  |  |  | I07TR01005C0 | IC | C | 07 | TR | ME | 010 | 05 | BILL 8 | B08 | S2 | WI | R00 | ACF07 | 010 |  |  | 2n | MEP |  |  |  |  |  |  |  |  |  |  |  |
| I07TR09205C0 |  | IC-07 ; Partitions Closing (TR RM) | 30d | 2012-02-05 | 2012-03-10 | I07TR01005C0, I07TR09201C0, I07TR09203C0, IAFOA09210C1 FF, I07TR08101C0 FF, I07SL09205C0 SS |  |  |  |  | 14d | 0d | PARTITIONS [30 m]; PARTITIONS [307 h]; Cost |  |  | 315 | 887 | I07TR09205C0 | IC | C | 07 | TR | PT | 092 | 05 | BILL 8 | B08 | S2 | FF | R00 | ACF06 | 092 |  |  |  | GP |  | P2F |  |  |  |  |  |  |  |  |  |
| I07TR26013C0 |  | IC-07 ; Final Fix, Termination & Gladding of Cables (TR RM) | 30d | 2012-03-08 | 2012-04-12 | I07TR26009C0 |  |  |  |  | 67.2d | 43.2d | ELECTRICAL [158.4 h]; Cost |  |  |  |  | I07TR26013C0 | IC | C | 07 | TR | ME | 260 | 13 | BILL 8 | B08 | S2 | FF | R00 | ACF07 | 260 |  |  | FF | MEP |  |  |  |  |  |  |  |  |  |  |  |
| I07TR09901C0 |  | IC-07 ; Wall Prime & 1st coat (TR RM) | 18d | 2012-03-11 | 2012-03-31 | I07TR09205C0 |  |  |  |  | 14d | 0d | WALL PAINT [58 h]; WALL PAINT [71 m2]; Cost |  |  | 360 | 20001110 | I07TR09901C0 | IC | C | 07 | TR | PA | 099 | 01 | BILL 8 | B08 | S2 | 01 | R00 | ACF06 | 099 |  |  |  |  |  |  |  |  |  |  |  |  |  |  |  |
| I07TR23009C0 |  | IC-07 ; 2nd Fix, Inst of VAV'S CHW connection (TR RM) | 36d | 2012-03-11 | 2012-04-21 | I07TR09205C0 |  |  |  |  | 24d | 0d | MECHANICAL [1722 h]; Cost |  |  |  |  | I07TR23009C0 | IC | C | 07 | TR | ME | 230 | 09 | BILL 8 | B08 | S2 | 2F | R00 | ACF07 | 230 |  |  | 2n | MEP |  |  |  |  |  |  |  |  | 25 | zero |  |
| I07TR23011C0 |  | IC-07 ; 2nd Fix, Inst of VCD's/FD's (TR RM) | 36d | 2012-03-11 | 2012-04-21 | I07TR09205C0 |  |  |  |  | 24d | 0d | MECHANICAL [1730.4 h]; Cost |  |  |  |  | I07TR23011C0 | IC | C | 07 | TR | ME | 230 | 11 | BILL 8 | B08 | S2 | 2F | R00 | ACF07 | 230 |  |  | 2n | MEP |  |  |  |  |  |  |  |  | 20 | zero |  |
| I07TR26007C0 |  | IC-07 ; 2nd Fix, Cable Pulling (TR RM) | 42d | 2012-03-11 | 2012-04-28 | I07TR09203C0, I07TR09205C0 |  |  |  |  | 54d | 30d | ELECTRICAL [3498 h]; Cost |  |  |  |  | I07TR26007C0 | IC | C | 07 | TR | ME | 260 | 07 | BILL 8 | B08 | S2 | 2F | R00 | ACF07 | 260 |  |  | 2n | MEP |  |  |  |  |  |  |  |  | 20 | zero |  |
| I07TR26027C0 |  | IC-07 ; 2nd Fix, Wiring / Cabling (TR RM) | 36d | 2012-03-11 | 2012-04-21 | I07TR09203C0, I07TR09205C0 |  |  |  |  | 60d | 46d | ELECTRICAL [853.2 h]; Cost |  |  | 417 | 1318 | I07TR26027C0 | IC | C | 07 | TR | ME | 260 | 27 | BILL 8 | B08 | S2 | 2F | R00 | ACF07 | 260 |  |  | 2n | MEP |  |  |  |  |  |  |  |  | 20 | zero |  |
| I07TR09501C0 |  | IC-07 ; Ceiling Grid and Service Tile (TR RM) | 18d | 2012-04-01 | 2012-04-21 | I07TR09205C0, I07TR09901C0 |  |  |  |  | 14d | 0d | CEILING GRID FOR GYPSUM [165.58 h]; CEILING GRID FOR GYPSUM [14.22 m2]; Cost |  |  | 336 | 1327 | I07TR09501C0 | IC | C | 07 | TR | CE | 095 | 01 | BILL 8 | B08 | S2 | 01 | R00 | ACF06 | 095 |  |  |  |  |  |  |  |  |  |  |  |  |  |  | 1 |
| I07TR09903C0 |  | IC-07 ; Wall - Final Paint (TR RM) | 12d | 2012-04-01 | 2012-04-14 | I07TR09901C0 |  |  |  |  | 110d | 96d | WALL PAINT [31 h]; WALL PAINT [38 m2]; Cost |  |  | 361 | 1312 | I07TR09903C0 | IC | C | 07 | TR | PA | 099 | 03 | BILL 8 | B08 | S2 | 02 | R00 | ACF06 | 099 |  |  |  |  |  |  |  |  |  |  |  |  |  |  |  |
| I07TR09601C0 |  | IC-07 ; Flooring (Rubber, etc) (TR RM) | 28d | 2012-04-22 | 2012-05-23 | I07TR09501C0 |  |  |  |  | 14d | 0d | RUBBER FLOOR [3321 m2]; RUBBER FLOOR [1328 h]; Cost |  |  | 359 | 20001120 | I07TR09601C0 | IC | C | 07 | TR | FF | 096 | 01 | BILL 8 | B08 | S2 | 03 | R00 | ACF06 | RF |  |  |  |  |  |  |  |  |  |  |  |  |  |  |  |
| I07TR09905C0 |  | IC-07 ; Ceiling Prime & 1st coat (TR RM) | 0d | 2012-04-22 | 2012-04-22 | I07TR09501C0 |  |  |  |  | 104d | 60d | Cost |  |  | 362 | 1313 | I07TR09905C0 | IC | C | 07 | TR | PA | 099 | 05 | BILL 8 | B08 | S2 | 01 | R00 | ACF06 | 099 |  |  |  |  |  |  |  |  |  |  |  |  |  |  |  |
| I07TR23003C0 |  | IC-07 ; Final Fix, Inst of Grilles & Diffusers (TR RM) | 30d | 2012-04-22 | 2012-05-26 | I07TR09501C0 |  |  |  |  | 30d | 6d | MECHANICAL [757.2 h]; Cost |  |  |  |  | I07TR23003C0 | IC | C | 07 | TR | ME | 230 | 03 | BILL 8 | B08 | S2 | FF | R00 | ACF07 | 230 |  |  | FF | MEP |  |  |  |  |  |  |  |  |  |  |  |
| I07TR23013C0 |  | IC-07 ; 2nd Fix, Insulation of CHW pipe & Duct (TR RM) | 36d | 2012-04-22 | 2012-06-02 | I07TR23009C0, I07TR23011C0 |  |  |  |  | 24d | 0d | MECHANICAL [3896.4 h]; Cost |  |  |  |  | I07TR23013C0 | IC | C | 07 | TR | ME | 230 | 13 | BILL 8 | B08 | S2 | 2F | R00 | ACF07 | 230 |  |  | 2n | MEP |  |  |  |  |  |  |  |  |  |  |  |
| I07TR23023C0 |  | IC-07 ; 2nd Fix, Flexible ducts (TR RM) | 36d | 2012-04-22 | 2012-06-02 | I07TR09205C0, I07TR09501C0 |  |  |  |  | 24d | 10d | MECHANICAL [892.8 h]; Cost |  |  | 412 | 20001140 | I07TR23023C0 | IC | C | 07 | TR | ME | 230 | 23 | BILL 8 | B08 | S2 | 2F | R00 | ACF07 | 230 |  |  | 2n | MEP |  |  |  |  |  |  |  |  |  |  |  |
| I07TR23074C0 |  | IC-07 ; Final Fix, Grilles, panels & diffusers (TR RM) | 30d | 2012-04-22 | 2012-05-26 | I07TR09501C0 |  |  |  |  | 30d | 6d | MECHANICAL [757.2 h]; Cost |  |  | 419 | 20001160 | I07TR23074C0 | IC | C | 07 | TR | ME | 230 | 74 | BILL 8 | B08 | S2 | FF | R00 | ACF07 | 230 |  |  | FF | MEP |  |  |  |  |  |  |  |  |  |  |  |
| I07TR26005C0 |  | IC-07 ; 2nd Fix, Wiring for Power/Lighting/Emergency (TR RM) | 36d | 2012-04-22 | 2012-06-02 | I07TR26026C0, I07TR09501C0 |  |  |  |  | 24d | 10d | ELECTRICAL [853.2 h]; Cost |  |  |  |  | I07TR26005C0 | IC | C | 07 | TR | ME | 260 | 05 | BILL 8 | B08 | S2 | 2F | R00 | ACF07 | 260 |  |  | 2n | MEP |  |  |  |  |  |  |  |  | 20 | zero |  |
| I07TR26015C0 |  | IC-07 ; Final Fix, Inst of Ceiling rose (TR RM) | 30d | 2012-04-22 | 2012-05-26 | I07TR09501C0 |  |  |  |  | 30d | 6d | ELECTRICAL [33.6 h]; Cost |  |  |  |  | I07TR26015C0 | IC | C | 07 | TR | ME | 260 | 15 | BILL 8 | B08 | S2 | FF | R00 | ACF07 | 260 |  |  | FF | MEP |  |  |  |  |  |  |  |  |  |  |  |
| I07TR26019C0 |  | IC-07 ; Final Fix, Inst of Light fittings (TR RM) | 36d | 2012-04-22 | 2012-06-02 | I07TR09501C0 |  |  |  |  | 24d | 0d | ELECTRICAL [9577.2 h]; Cost |  |  |  |  | I07TR26019C0 | IC | C | 07 | TR | ME | 260 | 19 | BILL 8 | B08 | S2 | FF | R00 | ACF07 | 260 |  |  | FF | MEP |  |  |  |  |  |  |  |  |  |  |  |
| I07TR26076C0 |  | IC-07 ; Final Fix, Lighting fittings (TR RM) | 36d | 2012-04-22 | 2012-06-02 | I07TR09501C0 |  |  |  |  | 24d | 0d | ELECTRICAL [9577.2 h]; Cost |  |  | 420 | 20001170 | I07TR26076C0 | IC | C | 07 | TR | ME | 260 | 76 | BILL 8 | B08 | S2 | FF | R00 | ACF07 | 260 |  |  | FF | MEP |  |  |  |  |  |  |  |  |  |  |  |
| I07TR27002C0 |  | IC-07 ; 2nd Fix, Dressing of ELV panels (TR RM) | 36d | 2012-04-22 | 2012-06-02 | I07TR09205C0, I07TR27020C0 SS |  |  |  |  | 24d | 0d | ELECTRICAL [945.6 h]; Cost |  |  |  |  | I07TR27002C0 | IC | C | 07 | TR | ME | 270 | 02 | BILL 8 | B08 | S2 | 2F | R00 | ACF07 | 270 |  |  | 2n | MEP |  |  |  |  |  |  |  |  |  |  |  |
| I07TR27020C0 |  | IC-07 ; 2nd Fix, Inst of ELV Equipment (Panels) (TR RM) | 36d | 2012-04-22 | 2012-06-02 | I07TR09205C0, I07TR09501C0 |  |  |  |  | 24d | 0d | ELECTRICAL [1214.4 h]; Cost |  |  |  |  | I07TR27020C0 | IC | C | 07 | TR | ME | 270 | 20 | BILL 8 | B08 | S2 | 2F | R00 | ACF04 | 270 |  |  | 2n | MEP |  |  |  |  |  |  |  | E |  |  |  |
| I07TR27030C0 |  | IC-07 ; Final Fix, Inst of ELV device (Detector/Speaker) (TR RM) | 36d | 2012-04-22 | 2012-06-02 | I07TR27002C0 SS |  |  |  |  | 24d | 0d | ELECTRICAL [1707.6 h]; Cost |  |  |  |  | I07TR27030C0 | IC | C | 07 | TR | ME | 270 | 30 | BILL 8 | B08 | S2 | FF | R00 | ACF07 | 270 |  |  | FF | MEP |  |  |  |  |  |  |  |  |  |  |  |
| I07TR08105C0 |  | IC-07 ; Doors (TR RM) | 18d | 2012-05-24 | 2012-06-13 | I07TR08101C0, I07TR09501C0, I07TR09601C0, I07TR09901C0 |  |  |  |  | 46d | 0d | ASSORTED DOORS [50 h]; ASSORTED DOORS [5 no]; Cost |  |  | 317 | 1325 | I07TR08105C0 | IC | C | 07 | TR | DO | 081 | 05 | BILL 8 | B08 | S2 | DR | R00 | ACF06 | 081 |  | 08 |  |  |  |  |  |  |  |  |  |  |  |  |  |
| I07TR21115C0 |  | IC-07 ; 2nd Fix, Gaseous Fire Suppression (TR RM) | 18d | 2012-05-24 | 2012-06-13 | I07TR09501C0, I07TR09601C0 |  |  |  |  | 14d | 0d | MECHANICAL [2080.8 h]; Cost |  |  | 411 | 20001130 | I07TR21115C0 | IC | C | 07 | TR | ME | 211 | 15 | BILL 8 | B08 | S2 | 2F | R00 | ACF07 | 211 |  |  | 2n | MEP |  |  |  |  |  |  |  |  |  |  |  |
| I07TR01006C0 |  | IC-07 ; 2nd, Ceiling Inspection by Consultants (TR RM) | 0d | 2012-06-03 | 2012-06-03 | I07TR23009C0, I07TR23011C0, I07TR23013C0, I07TR26007C0, I07TR09501C0, I07TR23003C0, I07TR23074C0, I07TR26015C0, I07TR26019C0, I07TR26076C0, I07TR26013C0, I07TR27030C0 |  |  |  |  | 24d | 10d | Cost |  |  |  |  | I07TR01006C0 | IC | C | 07 | TR | ME | 010 | 06 | BILL 8 | B08 | S2 | CI | R00 | ACF07 | 010 |  |  | 2n | MEP |  |  |  |  |  |  |  |  |  |  |  |
| I07TR08709C0 |  | IC-07 ; Ironmongery (TR RM) | 12d | 2012-06-14 | 2012-06-28 | I07TR08105C0 |  |  |  |  | 46d | 32d | IRONMONGERY [20 h]; IRONMONGERY [2 no]; Cost |  |  | 322 | 20001100 | I07TR08709C0 | IC | C | 07 | TR | DO | 087 | 09 | BILL 8 | B08 | S2 | IM | R00 | ACF06 | 087 |  | 08 |  |  |  |  |  |  |  |  |  |  |  |  |  |
| I07TR09503C0 |  | IC-07 ; Ceiling closure (TR RM) | 14d | 2012-06-14 | 2012-07-01 | I07TR01006C0, I07TR09501C0, I07TR21115C0, I07TR26005C0, I07TR26007C0, I07TR26026C0, I07TR26027C0, I07TR23023C0 |  |  |  |  | 14d | 0d | ASSORTED CEILING FINISH [34.44 h]; CEILING GYPSUM [4.71 h]; ASSORTED CEILING FINISH [56 m2]; CEILING GYPSUM [14 m2]; Cost |  |  | 337 | 20001080 | I07TR09503C0 | IC | C | 07 | TR | CE | 095 | 03 | BILL 8 | B08 | S2 | 02 | R00 | ACF06 | 095 |  |  |  |  |  |  |  |  |  |  |  |  |  |  |  |
| I07TR09907C0 |  | IC-07 ; Ceiling - Final paint (TR RM) | 0d | 2012-07-02 | 2012-07-02 | I07TR09905C0, I07TR09503C0 |  |  |  |  | 44d | 30d | Cost |  |  | 363 | 1314 | I07TR09907C0 | IC | C | 07 | TR | PA | 099 | 07 | BILL 8 | B08 | S2 | 02 | R00 | ACF06 | 099 |  |  |  |  |  |  |  |  |  |  |  |  |  |  |  |
| I07TR26017C0 |  | IC-07 ; Final Fix, Inst of Switch/Sockets (TR RM) | 12d | 2012-07-02 | 2012-07-15 | I07TR09901C0, I07TR09503C0 |  |  |  |  | 14d | 0d | ELECTRICAL [164.4 h]; Cost |  |  |  |  | I07TR26017C0 | IC | C | 07 | TR | ME | 260 | 17 | BILL 8 | B08 | S2 | FF | R00 | ACF07 | 260 |  |  | FF | MEP |  |  |  |  |  |  |  |  |  |  |  |
| I07TR01802C0 |  | IC-07 ; MEP de-snag, FIREM sign-off | 18d | 2012-07-16 | 2012-08-05 | I07TR26017C0, I07TR23074C0, I07TR23003C0, I07TR26076C0, I07TR26013C0, I07TR26015C0, I07TR26019C0, I07TR27030C0, I07TR27020C0, I07TR27002C0 |  |  |  |  | 14d | 0d | TESTING & COMMISSIONING [510 h]; Cost |  |  |  |  | CP3CO01851C0 | IC | C | 07 | TR | SC | 018 | 53 | BILL 8 | B08 | S2 | 01 | R00 | ACF07 | 018 |  |  |  |  |  |  |  |  |  |  |  |  |  |  |  |
| I07TR01801C0 |  | IC-07 ; Touch-up & Clean / JV inspection /CIR /De-snag | 24d | 2012-08-06 | 2012-09-04 | I07TR01802C0, I07TR08709C0, I07TR09601C0, I07TR09903C0, I07TR09907C0, I07TR09503C0 |  |  |  |  | 14d | 0d | TESTING & COMMISSIONING [128 h]; Cost |  |  | 396 |  | I07TR01851C0 | IC | C | 07 | TR | SC | 018 | 51 | BILL 8 | B08 | S2 | 02 | R00 | ACF07 | 018 |  |  |  |  |  |  |  |  |  |  |  |  |  |  |  |
| I07TR01803C0 |  | IC-07 ; Consultant's final de-snag inspection | 12d | 2012-09-05 | 2012-09-18 | I07TR01801C0 |  |  |  |  | 14d | 0d | Labor General [1 h]; Cost |  |  |  |  | CP3TS01803C0 | IC | C | 07 | TR | SC | 018 | 03 | BILL 8 | B08 | S1 | 03 | R00 | ACF07 | 018 |  |  |  |  |  |  |  |  |  |  |  |  |  |  |  |

| ID | WBS | Activity | Duration | Start | Finish | Predecessors | Complete | Remaining | Planned start | Planned finish | Total float | Free float | Resources | Cost | Actual cost | user_number8 | user_integer1 | user_integer2 | user_number7 | Change Order # | NEW ACTIVITY ID | change id | RENZ % COMPLETE | Claimed This Month | U% | CCAD BUILDING(SET) | CCAD PHASE(SET) | CCAD FLOOR(SET) | CCAD ZONE(SET) | CCAD WORK(SET) | CCAD SECTION(SET) | CCAD SERIAL No.(SET) | CCAD CBS(SET) | CCAD BILL(SET) | CCAD HANDOVER(SET) | CCAD TAG(SET) | CCAD REV(SET) | CCADACF (SET) | CCAD CSA | CCAD SSCF | Act Selector % | R3 Partitions | CCAD SUB ZONE MEP(SET) | July2011 Target% Complete | N_% | P_811 | P_711 | FILTER | CCAD DIVISION(SET) | CCAD MEQ | R3 Finish |
| --- | --- | --- | --- | --- | --- | --- | --- | --- | --- | --- | --- | --- | --- | --- | --- | --- | --- | --- | --- | --- | --- | --- | --- | --- | --- | --- | --- | --- | --- | --- | --- | --- | --- | --- | --- | --- | --- | --- | --- | --- | --- | --- | --- | --- | --- | --- | --- | --- | --- | --- | --- |
|  | 05 | **Corridor, Central Station** |  | 2011-05-15 | 2012-12-17 |  |  |  |  |  |  |  |  |  |  |  |  |  |  |  |  |  |  |  |  |  |  |  |  |  |  |  |  |  |  |  |  |  |  |  |  |  |  |  |  |  |  |  |  |  |  |
| I07PA09201C0 |  | IC-07 ; Metal Studs (Public Area) | 75d | 2011-05-15 A | 2011-11-17 | I07PA23001C0 SS+12d, I07PA23001C0 FF, IAFCI09201R02 FS+65d | 80% | 15d | 2011-07-19 | 2011-10-17 | 26.32d | 0d | PARTITIONS [4417 h]; PARTITIONS - Metal Studs [457 m]; Cost |  |  | 0 | 0 | 0 | 0 | 313 | 944 | I07PA09201C0 | 5 | 159760.21 | 80 | IC | C | 07 | PA | PT | 092 | 01 | BILL 8 | B08 | S2 | 1F | R00 | ACF06 | GP | 092 | PMS | R3 |  |  |  |  |  |  |  |  |  |
| I07PA23001C0 |  | IC-07 ; 1st Fix, Inst. of Supports for MEP (Public Area) | 24d | 2011-05-17 A | 2011-05-30 A | I07S107807C0, I07S207807C0 | 100% |  | 2011-07-05 | 2011-08-02 |  |  | MECHANICAL [2166 h]; Cost [32540.2 AED] | 32,540.18 | 32,540.18 |  |  |  |  |  |  | I07PA23001C0 | 100 |  |  | IC | C | 07 | PA | ME | 230 | 01 | BILL 8 | B08 | S2 | 1F | R00 | ACF04 | MEP | 230 | M1F |  | 1S |  |  |  |  |  |  |  |  |
| I07PA09203C0 |  | IC-07 ; Partitions early wall & 1st face (Public Area) | 75d | 2011-06-01 A | 2011-12-25 | I07PA09201C0 | 60% | 30d | 2011-06-01 | 2011-08-29 | 53d | 0d | PARTITIONS [457 m]; PARTITIONS [3449 h]; Cost |  |  |  |  |  |  | 314 | 945 | I07PA09203C0 |  | 31952.04 |  | IC | C | 07 | PA | PT | 092 | 03 | BILL 8 | B08 | S2 | 2F | R00 | ACF06 | GP | 092 | P1F |  |  |  |  |  |  |  |  |  |  |
| I07PA22011C0 |  | IC-07 ; 2nd Fix, Drainage/Water pipe (wall) (Public Area) | 66d | 2011-06-01 A | 2012-01-30 | I07PA09201C0 | 10% | 59.4d | 2011-06-01 | 2011-08-18 | 26.32d | 0d | PLUMBING [891.6 h]; Cost [34080.3 AED] | 34,080.3 | 3,408.03 |  |  |  |  |  |  | I07PA22011C0 |  | 28287.67 |  | IC | C | 07 | PA | ME | 220 | 11 | BILL 8 | B08 | S2 | 2F | R00 | ACF07 | MEP | 220 |  |  | 2n | 50 | 10 |  |  |  |  |  |  |
| I07PA26001C0 |  | IC-07 ; 1st Fix, Inst of Trunking/Conduiting (Public Area) | 84d | 2011-06-01 A | 2011-11-16 | I07PA23001C0, I07S107807C0, I07S207807C0 | 55% | 37.8d | 2011-06-01 | 2011-09-11 | 32.35d | 0d | ELECTRICAL [397.2 h]; Cost [20466.7 AED] | 20,466.68 | 11,256.67 | 0 | 0 | 0 | 0 |  |  | I07PA26001C0 |  | 7127.02 |  | IC | C | 07 | PA | ME | 260 | 01 | BILL 8 | B08 | S2 | 1F | R00 | ACF04 | MEP | 260 | M1F |  | 1S | 15 | 10 | 35 | 10 |  |  |  |  |
| I07PA27010C0 |  | IC-07 ; 1st Fix, Inst of Trunking for ELV system (Public Area) | 108d | 2011-06-18 A | 2011-10-19 | I07PA23001C0, I07PA26001C0 SS+14d, I07S107807C0, I07S207807C0 | 85% | 16.2d | 2011-06-18 | 2011-10-25 | 32.35d | 0d | ELECTRICAL [914.4 h]; Cost [47960 AED] | 47,960.04 | 40,766.03 | 0 | 0 | 0 | 0 |  |  | I07PA27010C0 |  | 13911.7 |  | IC | C | 07 | PA | ME | 270 | 10 | BILL 8 | B08 | S2 | 1F | R00 | ACF04 | MEP | 270 | M1F |  | 1S | 10 | 45 | 65 | 45 |  |  |  |  |
| I07PA21111C0 |  | IC-07 ; 1st Fix, Inst of Sprinkler main pipe (Public Area) | 150d | 2011-06-19 A | 2011-10-26 | I07PA22005C0 SS+12d, I07PA23001C0 | 85% | 22.5d | 2011-08-08 | 2012-02-09 | 32.35d | 0d | MECHANICAL [264 h]; Cost [14398.4 AED] | 14,398.38 | 12,238.62 | 0 | 0 | 0 | 0 |  |  | I07PA21111C0 |  | 4178.23 | 85 | IC | C | 07 | PA | ME | 211 | 11 | BILL 8 | B08 | S2 | 1F | R00 | ACF04 | MEP | 211 | M1F |  | 1S | 55 | 50 | 85 | 50 |  |  |  |  |
| I07PA26013C0 |  | IC-07 ; 1st Fix, Inst of Cable Tray (Public Area) | 54.08d | 2011-06-21 A | 2011-07-31 A | I07PA23001C0, I07PA27010C0 SS+10d, I07S107807C0, I07S207807C0 | 100% |  | 2011-06-30 | 2011-09-04 |  |  | ELECTRICAL [205.2 h]; Cost [11036 AED] | 11,035.96 | 11,035.96 |  |  |  |  |  |  | I07PA26013C0 |  | 5124 |  | IC | C | 07 | PA | ME | 260 | 13 | BILL 8 | B08 | S2 | 1F | R00 | ACF04 | MEP | 260 | M1F |  | 1S | 45 | 100 |  |  |  |  |  |  |
| I07PA22019C0 |  | IC-07 ; 1st Fix, Inst of Drainage pipe (ceiling) (Public Area) | 108d | 2011-06-27 A | 2011-11-16 | I07PA23001C0, I07PA26013C0 SS+14d | 65% | 37.8d | 2011-07-17 | 2011-11-27 | 32.35d | 0d | PLUMBING [630 h]; Cost [34080.3 AED] | 34,080.3 | 22,152.2 | 0 | 0 | 0 | 0 |  |  | I07PA22019C0 |  | 19753.63 | 65 | IC | C | 07 | PA | ME | 220 | 19 | BILL 8 | B08 | S2 | 1F | R00 | ACF04 | MEP | 220 | M1F |  | 1S | 25 | 50 | 60 | 50 |  |  |  |  |
| I07PA21117C0 |  | IC-07 ; 1st Fix, Inst of Sprinkler branch pipe (Public Area) | 108d | 2011-07-10 A | 2011-12-10 | I07PA09201C0, I07PA21111C0 | 85% | 16.2d | 2011-09-07 | 2012-01-18 | 105.55d | 79.22d | MECHANICAL [609.6 h]; Cost [33303.7 AED] | 33,303.68 | 28,308.12 | 0 | 0 | 0 | 0 |  |  | I07PA21117C0 |  |  | 85 | IC | C | 07 | PA | ME | 211 | 17 | BILL 8 | B08 | S2 | 1F | R00 | ACF04 | MEP | 211 | M1F |  | 1S | 45 | 40 | 75 | 40 |  |  |  |  |
| I07PA22005C0 |  | IC-07 ; 1st Fix, Inst of Water supply pipe (ceiling) (Public Area) | 72d | 2011-07-10 A | 2011-11-14 | I07PA22019C0 SS+7d, I07PA23001C0 | 50% | 36d | 2011-07-12 | 2011-10-05 | 32.35d | 0d | PLUMBING [1670.4 h]; Cost [90220.7 AED] | 90,220.67 | 45,110.33 | 0 | 0 | 0 | 0 |  |  | I07PA22005C0 |  |  | 30 | IC | C | 07 | PA | ME | 220 | 05 | BILL 8 | B08 | S2 | 1F | R00 | ACF04 | MEP | 220 | M1F |  | 1S | 30 | 3 | 20 | 3 |  |  |  |  |
| I07PA23017C0 |  | IC-07 ; 1st Fix, Inst of CHW pipe (Public Area) | 84d | 2011-07-10 A | 2011-12-04 | I07PA21111C0 SS+12d, I07PA23001C0 | 40% | 50.4d | 2011-07-28 | 2011-11-05 | 32.35d | 0d | MECHANICAL [2832 h]; Cost [154640 AED] | 154,640.47 | 61,856.19 | 0 | 0 | 0 | 0 |  |  | I07PA23017C0 |  |  | 40 | IC | C | 07 | PA | ME | 230 | 17 | BILL 8 | B08 | S2 | 1F | R00 | ACF04 | MEP | 230 | M1F |  | 1S | 25 | 20 | 30 | 20 |  |  |  |  |
| I07PA23023C0 |  | IC-07 ; 1st Fix, Inst of Main Ducting (Public Area) | 90d | 2011-07-10 A | 2011-11-24 | I07PA23001C0, I07PA23017C0 SS+7d | 50% | 45d | 2011-08-06 | 2011-11-23 | 85.75d | 0d | MECHANICAL [7574.4 h]; Cost [413624 AED] | 413,624.26 | 206,812.13 | 0 | 0 | 0 | 0 |  |  | I07PA23023C0 |  |  | 50 | IC | C | 07 | PA | ME | 230 | 23 | BILL 8 | B08 | S2 | 1F | R00 | ACF04 | MEP | 230 | M1F |  | 1S | 35 | 20 | 40 | 20 |  |  |  |  |
| I07PA23008C0 |  | IC-07 ; 1st Fix, Inst of VCD's/FD's (Public Area) | 48d | 2011-09-05 A | 2012-01-18 | I07PA23023C0 | 10% | 43.2d | 2011-11-03 | 2012-01-04 | 102.55d | 76.22d | MECHANICAL [910.8 h]; Cost [49161.7 AED] | 49,161.67 | 4,916.17 |  |  |  |  |  |  | I07PA23008C0 |  |  |  | IC | C | 07 | PA | ME | 230 | 08 | BILL 8 | B08 | S2 | 1F | R00 | ACF04 | MEP | 230 | M1F |  | 1S | 20 |  |  |  | zero |  |  |  |
| I07PA27001C0 |  | IC-07 ; 1st Fix, Wiring/ Cabling work (Public Area) | 48d | 2011-11-16 | 2012-01-15 | I07PA26001C0, I07PA26013C0, I07PA27010C0 |  |  |  |  | 104.95d | 78.62d | ELECTRICAL [213.6 h]; Cost |  |  |  |  |  |  |  |  | I07PA27001C0 |  |  |  | IC | C | 07 | PA | ME | 270 | 01 | BILL 8 | B08 | S2 | 1F | R00 | ACF04 | MEP | 270 | M1F |  | 1S | 20 |  |  |  | zero |  |  |  |
| I07PA26009C0 |  | IC-07 ; 2nd Fix, Inst of Wall conduites (Public Area) | 48d | 2011-11-19 | 2012-01-16 | I07PA09201C0 |  |  |  |  | 37.73d | 11.4d | ELECTRICAL [1662 h]; Cost |  |  |  |  |  |  |  |  | I07PA26009C0 |  |  |  | IC | C | 07 | PA | ME | 260 | 09 | BILL 8 | B08 | S2 | 2F | R00 | ACF07 | MEP | 260 |  |  | 2n | 25 |  |  |  | zero |  |  |  |
| I07PA40302C0 |  | IC-07 ; 2nd Fix, Pneumatic tube (Public Area) | 48d | 2011-11-19 | 2012-01-16 | I07PA09201C0 |  |  |  |  | 37.73d | 11.4d | MECHANICAL [2476.8 h]; Cost |  |  |  |  |  |  |  |  | C03E140302C0 |  |  |  | IC | C | 07 | PA | ME | 403 | 02 | BILL 8 | B08 | S2 | 2F | R00 | ACF07 | MEP | 403 |  |  | 2n |  |  |  |  |  |  |  |  |
| I07PA23009C0 |  | IC-07 ; 2nd Fix, Inst of VAV'S CHW connection (Public Area) | 48d | 2011-12-04 | 2012-01-30 | I07PA23017C0 |  |  |  |  | 32.35d | 0d | MECHANICAL [1722 h]; Cost |  |  |  |  |  |  |  |  | I07PA23009C0 |  |  |  | IC | C | 07 | PA | ME | 230 | 09 | BILL 8 | B08 | S2 | 2F | R00 | ACF07 | MEP | 230 |  |  | 2n | 20 |  |  |  | zero |  |  |  |
| I07PA08103C0 |  | IC-07 ; Door Frames (Public Area) | 36d | 2011-12-22 | 2012-02-02 | GNHE08101C0 FS+69d, I07P208103C0 SS+3d |  |  |  |  | 58.75d | 0d | ASSORTED DOORS [233 h]; Cost |  |  |  |  |  |  | 316 | 947 | I07PA08103C0 |  |  |  | IC | C | 07 | PA | DO | 081 | 03 | BILL 8 | B08 | S2 | DF | R00 | ACF06 |  | 081 |  |  |  |  |  |  |  |  | 08 |  |  |
| I07PA01005C0 |  | IC-07 ; 2nd, Wall Inspection by Consultant (Public Area) | 0d | 2012-01-30 | 2012-01-30 | I07PA22011C0, I07PA26009C0, I07PA40302C0 |  |  |  |  | 26.32d | 0d | Cost |  |  |  |  |  |  |  |  | I07PA01005C0 |  |  |  | IC | C | 07 | PA | ME | 010 | 05 | BILL 8 | B08 | S2 | WI | R00 | ACF07 | MEP | 010 |  |  | 2n |  |  |  |  |  |  |  |  |
| I07PA09205C0 |  | IC-07 ; Partitions Closing (Public Area) | 36.02d | 2012-01-30 | 2012-03-13 | I07PA01005C0, I07PA09203C0, I07PA22005C0, I07PA22019C0, IAFOA09210C1 FF, IAFCI22001R02 FS+65d, I07PA08103C0 FF, I07PA21117C0 FF |  |  |  |  | 26.32d | 0d | PARTITIONS [457 m]; PARTITIONS [4413 h]; Cost |  |  |  |  |  |  | 315 | 946 | I07PA09205C0 |  |  |  | IC | C | 07 | PA | PT | 092 | 05 | BILL 8 | B08 | S2 | FF | R00 | ACF06 | GP | 092 | P2F | R3 |  |  |  |  |  |  |  |  |  |
| I07PA23015C0 |  | IC-07 ; 2nd Fix, Insulation of CHW pipe & Duct (Public Area) | 60d | 2012-01-30 | 2012-04-10 | I07PA23009C0, I07PA23017C0, I07PA23023C0 |  |  |  |  | 32.35d | 6.03d | MECHANICAL [3896.4 h]; Cost |  |  |  |  |  |  |  |  | I07PA23015C0 |  |  |  | IC | C | 07 | PA | ME | 230 | 15 | BILL 8 | B08 | S2 | 2F | R00 | ACF07 | MEP | 230 |  |  | 2n |  |  |  |  |  |  |  |  |
| I07PA09901C0 |  | IC-07 ; Wall Prime & 1st coat (Public Area) | 30d | 2012-03-13 | 2012-04-17 | I07PA09205C0 |  |  |  |  | 26.32d | 0d | WALL PAINT [830 h]; WALL PAINT [1036 m2]; Cost |  |  |  |  |  |  | 328 | 956 | I07PA09901C0 |  |  |  | IC | C | 07 | PA | PA | 099 | 01 | BILL 8 | B08 | S2 | 01 | R00 | ACF06 |  | 099 |  |  |  |  |  |  |  |  |  |  |  |
| I07PA26005C0 |  | IC-07 ; 2nd Fix, Wiring for Power/Lighting/Emergency (Public Area) | 48d | 2012-03-13 | 2012-05-08 | I07PA09205C0 |  |  |  |  | 104.33d | 0d | ELECTRICAL [853.2 h]; Cost |  |  |  |  |  |  |  |  | I07PA26005C0 |  |  |  | IC | C | 07 | PA | ME | 260 | 05 | BILL 8 | B08 | S2 | 2F | R00 | ACF07 | MEP | 260 |  |  | 2n |  |  |  |  |  |  |  |  |
| I07PA26007C0 |  | IC-07 ; 2nd Fix, Cable Pulling (Public Area) | 54d | 2012-03-13 | 2012-05-15 | I07PA09201C0 SS+6d, I07PA09205C0 |  |  |  |  | 134.32d | 108d | ELECTRICAL [3498 h]; Cost |  |  |  |  |  |  |  |  | I07PA26007C0 |  |  |  | IC | C | 07 | PA | ME | 260 | 07 | BILL 8 | B08 | S2 | 2F | R00 | ACF07 | MEP | 260 |  |  | 2n | 10 |  |  |  | zero |  |  |  |
| I07PA26053C0 |  | IC-07 ; 2nd Fix, Wiring / Cabling (Public Area) | 48d | 2012-03-13 | 2012-05-08 | I07PA09203C0, I07PA09205C0 |  |  |  |  | 140.32d | 114d | ELECTRICAL [853.2 h]; Cost |  |  |  |  |  |  | 389 | 977 | I07PA26053C0 |  |  |  | IC | C | 07 | PA | ME | 260 | 53 | BILL 8 | B08 | S2 | 2F | R00 | ACF07 | MEP | 260 |  |  | 2n |  |  |  |  |  |  |  |  |
| I07PA26011C0 |  | IC-07 ; 2nd Fix, Inst of Equipment (DB) (Public Area) | 66d | 2012-04-16 | 2012-07-02 | I07PA09205C0, I07P226011C0 SS+3d |  |  |  |  | 42.25d | 0d | ELECTRICAL [1887.6 h]; Cost |  |  |  |  |  |  |  |  | I07PA26011C0 |  |  |  | IC | C | 07 | PA | ME | 260 | 11 | BILL 8 | B08 | S2 | 2F | R00 | ACF04 | MEP | 260 |  |  | 2n |  |  |  |  |  |  | E |  |
| I07PA05501C0 |  | IC-07 ; Handrails & balustrade (Public Area) | 36d | 2012-04-17 | 2012-05-29 | I07PA09901C0, IAFT805509C0 |  |  |  |  | 44.33d | 0d | SECONDARY STEEL [362 h]; Cost |  |  |  |  |  |  |  |  | I07PA05501C0 |  |  |  | IC | C | 07 | PA | SW | 055 | 01 | BILL 8 | B08 | S2 | 01 | R00 | ACF03 |  | a |  |  |  |  |  |  |  |  |  |  |  |
| I07PA09501C0 |  | IC-07 ; Ceiling Grid and Service Tile (Public Area) | 36d | 2012-04-17 | 2012-05-29 | I07PA09205C0, I07PA21117C0, I07PA23008C0, I07PA23009C0, I07PA23015C0, I07PA27001C0, IAFCI22002R02 FS+65d, I07PA09901C0 |  |  |  |  | 26.32d | 0d | CEILING GRID FOR GYPSUM [2074.62 h]; CEILING GRID FOR GYPSUM [177.49 m2]; Cost |  |  |  |  |  |  | 323 | 952 | I07PA09501C0 |  |  |  | IC | C | 07 | PA | CE | 095 | 01 | BILL 8 | B08 | S2 | 01 | R00 | ACF06 |  | 095 |  |  |  |  |  |  |  |  |  |  | R3 |
| I07PA26015C0 |  | IC-07 ; Final Fix, Termination & Gladding of Cables (Public Area) | 36d | 2012-05-08 | 2012-06-20 | I07PA26005C0 |  |  |  |  | 104.33d | 72d | ELECTRICAL [158.4 h]; Cost |  |  |  |  |  |  |  |  | I07PA26015C0 |  |  |  | IC | C | 07 | PA | ME | 260 | 15 | BILL 8 | B08 | S2 | FF | R00 | ACF07 | MEP | 260 |  |  | FF |  |  |  |  |  |  |  |  |
| I07PA09601C0 |  | IC-07 ; Flooring (Terrazzo) (Public Area) | 42d | 2012-05-29 | 2012-07-18 | IAFCI22002R02 FS+65d, I07PA09501C0, I07PA05501C0 |  |  |  |  | 44.33d | 0d | TERRAZO FLOOR [808 h]; TERRAZO FLOOR [446 m2]; Cost |  |  |  |  |  |  | 326 | 955 | I07PA09601C0 |  |  |  | IC | C | 07 | PA | FF | 096 | 01 | BILL 8 | B08 | S2 | 07 | R00 | ACF06 |  | TZ |  |  |  |  |  |  |  |  |  |  | R3 |
| I07PA09602C0 |  | IC-07 ; Flooring (Stone) (Public Area) | 42d | 2012-05-29 | 2012-07-18 | IAFCI22002R02 FS+65d, I07PA09501C0 |  |  |  |  | 44.33d | 0d | STONE FLOOR [704 h]; STONE FLOOR [779 m2]; Cost |  |  |  |  |  |  | 326 | 955 | I07PA09601C0 |  |  |  | IC | C | 07 | PA | FF | 096 | 01 | BILL 8 | B08 | S2 | 09 | R00 | ACF06 |  | ST |  |  |  |  |  |  |  |  |  |  | R3 |
| I07PA09903C0 |  | IC-07 ; Wall Final Paint (Public Area) | 30d | 2012-05-29 | 2012-07-04 | I07PA09901C0, I07PA09905C0, I07PA09501C0 |  |  |  |  | 146.32d | 96d | WALL PAINT [447 h]; WALL PAINT [558 m2]; Cost |  |  |  |  |  |  | 329 | 957 | I07PA09903C0 |  |  |  | IC | C | 07 | PA | PA | 099 | 03 | BILL 8 | B08 | S2 | 02 | R00 | ACF06 |  | 099 |  |  |  |  |  |  |  |  |  |  |  |
| I07PA09905C0 |  | IC-07 ; Ceiling Prime & 1st coat (Public Area) | 0d | 2012-05-29 | 2012-05-29 | I07PA09501C0 |  |  |  |  | 146.32d | 0d | Cost |  |  |  |  |  |  | 330 | 958 | I07PA09905C0 |  |  |  | IC | C | 07 | PA | PA | 099 | 05 | BILL 8 | B08 | S2 | 01 | R00 | ACF06 |  | 099 |  |  |  |  |  |  |  |  |  |  |  |
| I07PA21115C0 |  | IC-07 ; 2nd Fix, Inst of Sprinkler droppers (Public Area) | 48d | 2012-05-29 | 2012-07-25 | I07PA09501C0 |  |  |  |  | 38.33d | 0d | MECHANICAL [1032 h]; Cost |  |  |  |  |  |  |  |  | I07PA21115C0 |  |  |  | IC | C | 07 | PA | ME | 211 | 15 | BILL 8 | B08 | S2 | 2F | R00 | ACF07 | MEP | 211 |  |  | 2n |  |  |  |  |  |  |  |  |
| I07PA23021C0 |  | IC-07 ; 2nd Fix, Inst of Flexible Duct & Plenum boxes (Public Area) | 48d | 2012-05-29 | 2012-07-25 | I07PA09205C0, I07PA09501C0 |  |  |  |  | 38.33d | 0d | MECHANICAL [892.8 h]; Cost |  |  |  |  |  |  |  |  | I07PA23021C0 |  |  |  | IC | C | 07 | PA | ME | 230 | 21 | BILL 8 | B08 | S2 | 2F | R00 | ACF07 | MEP | 230 |  |  | 2n |  |  |  |  |  |  |  |  |
| I07PA26017C0 |  | IC-07 ; Final Fix, Inst of Ceiling rose (Public Area) | 36d | 2012-05-29 | 2012-07-11 | I07PA09501C0 |  |  |  |  | 32.33d | 0d | ELECTRICAL [33.6 h]; Cost |  |  |  |  |  |  |  |  | I07PA26017C0 |  |  |  | IC | C | 07 | PA | ME | 260 | 17 | BILL 8 | B08 | S2 | FF | R00 | ACF07 | MEP | 260 |  |  | FF |  |  |  |  |  |  |  |  |
| I07PA27002C0 |  | IC-07 ; 2nd Fix, Wiring Droppers (Public Area) | 48d | 2012-05-29 | 2012-07-25 | I07PA09501C0 |  |  |  |  | 69.33d | 0d | ELECTRICAL [853.2 h]; Cost |  |  |  |  |  |  |  |  | I07PA27002C0 |  |  |  | IC | C | 07 | PA | ME | 270 | 02 | BILL 8 | B08 | S2 | 2F | R00 | ACF07 | MEP | 270 |  |  | 2n |  |  |  |  |  |  |  |  |
| I07PA27020C0 |  | IC-07 ; 2nd Fix, Inst of ELV Equipment (Panels) (Public Area) | 60d | 2012-05-29 | 2012-08-08 | I07PA09205C0, I07PA09501C0 |  |  |  |  | 26.32d | 0d | ELECTRICAL [1214.4 h]; Cost |  |  |  |  |  |  |  |  | I07PA27020C0 |  |  |  | IC | C | 07 | PA | ME | 270 | 20 | BILL 8 | B08 | S2 | 2F | R00 | ACF04 | MEP | 270 |  |  | 2n |  |  |  |  |  |  | E |  |
| I07PA40303C0 |  | IC-07 ; Final Fix, Pneumatic Station (Public Area) | 48d | 2012-05-29 | 2012-07-25 | I07PA09501C0 |  |  |  |  | 74.33d | 42d | MECHANICAL [2031.6 h]; Cost |  |  |  |  |  |  |  |  | C03E140303C0 |  |  |  | IC | C | 07 | PA | ME | 403 | 03 | BILL 8 | B08 | S2 | FF | R00 | ACF07 | MEP | 403 |  |  | FF |  |  |  |  |  |  |  |  |
| I07PA27030C0 |  | IC-07 ; Final Fix, Inst of ELV device (Detector/Speaker) (Public Area) | 48d | 2012-06-04 | 2012-07-31 | I07PA09501C0, I07PA27002C0 SS+5d |  |  |  |  | 69.33d | 37d | ELECTRICAL [1707.6 h]; Cost |  |  |  |  |  |  |  |  | I07PA27030C0 |  |  |  | IC | C | 07 | PA | ME | 270 | 30 | BILL 8 | B08 | S2 | FF | R00 | ACF07 | MEP | 270 |  |  | FF |  |  |  |  |  |  |  |  |
| I07PA08107C0 |  | IC-07 ; Doors (Public Area) | 36d | 2012-06-27 | 2012-08-08 | I07PA08103C0, I07PA09501C0, I07PA09601C0 SS+24d, I07PA09901C0, I07PA09602C0 SS+24d |  |  |  |  | 92.33d | 0d | ASSORTED DOORS [740 h]; ASSORTED DOORS [74 no]; Cost |  |  |  |  |  |  | 317 | 948 | I07PA08107C0 |  |  |  | IC | C | 07 | PA | DO | 081 | 07 | BILL 8 | B08 | S2 | DR | R00 | ACF06 |  | 081 |  |  |  |  |  |  |  |  | 08 |  |  |
| I07PA26003C0 |  | IC-07 ; Final Fix, Inst of Light fittings (Public Area) | 54d | 2012-07-11 | 2012-09-15 | I07PA09501C0, I07PA26017C0 |  |  |  |  | 32.33d | 0d | ELECTRICAL [9577.2 h]; Cost |  |  |  |  |  |  |  |  | I07PA26003C0 |  |  |  | IC | C | 07 | PA | ME | 260 | 03 | BILL 8 | B08 | S2 | FF | R00 | ACF07 | MEP | 260 |  |  | FF |  |  |  |  |  |  |  |  |
| I07PA21113C0 |  | IC-07 ; Final Fix, Inst of Sprinklers head/ Extinguisher (Public Area) | 36d | 2012-07-25 | 2012-09-08 | I07PA09501C0, I07PA21115C0 |  |  |  |  | 38.33d | 6d | MECHANICAL [601.2 h]; Cost |  |  |  |  |  |  |  |  | I07PA21113C0 |  |  |  | IC | C | 07 | PA | ME | 211 | 13 | BILL 8 | B08 | S2 | FF | R00 | ACF07 | MEP | 211 |  |  | FF |  |  |  |  |  |  |  |  |
| I07PA23019C0 |  | IC-07 ; Final Fix, Inst of Grilles & Diffusers (Public Area) | 36d | 2012-07-25 | 2012-09-08 | I07PA09501C0, I07PA23021C0 |  |  |  |  | 38.33d | 6d | MECHANICAL [757.2 h]; Cost |  |  |  |  |  |  |  |  | I07PA23019C0 |  |  |  | IC | C | 07 | PA | ME | 230 | 19 | BILL 8 | B08 | S2 | FF | R00 | ACF07 | MEP | 230 |  |  | FF |  |  |  |  |  |  |  |  |
| I07PA08709C0 |  | IC-07 ; Ironmongery (Public Area) | 24d | 2012-08-08 | 2012-09-08 | I07PA08107C0 |  |  |  |  | 92.33d | 66d | IRONMONGERY [340 h]; IRONMONGERY [34 no]; Cost |  |  |  |  |  |  | 322 | 951 | I07PA08709C0 |  |  |  | IC | C | 07 | PA | DO | 087 | 09 | BILL 8 | B08 | S2 | IM | R00 | ACF06 |  | 087 |  |  |  |  |  |  |  |  | 08 |  |  |
| I07PA09701C0 |  | IC-07 ; Wall finishes (ST, WD, WC) (Public Area) | 36d | 2012-08-08 | 2012-09-22 | I07PA26011C0, I07PA27020C0, TVT0114211C0, TVT0214211C0, TVT1214211C0, I07PA09601C0, I07PA09602C0 |  |  |  |  | 26.32d | 0d | ASSORTED WALL FINISH [440 h]; ASSORTED WALL FINISH [505 m2]; Cost |  |  |  |  |  |  | 105 | 1002 | I07PA09701C0 |  |  |  | IC | C | 07 | PA | WF | 097 | 01 | BILL 8 | B08 | S2 | 01 | R00 | ACF06 |  | 097 |  |  |  |  |  |  |  |  |  |  |  |
| I07PA01006C0 |  | IC-07 ; 2nd, Ceiling Inspection by Consultants (Public Area) | 0d | 2012-09-15 | 2012-09-15 | I07PA21115C0, I07PA23009C0, I07PA23015C0, I07PA27002C0, I07PA09501C0, I07PA21113C0, I07PA23019C0, I07PA26003C0, I07PA26017C0, I07PA27030C0, I07PA40303C0, I07PA26015C0 |  |  |  |  | 32.33d | 6d | Cost |  |  |  |  |  |  |  |  | I07PA01006C0 |  |  |  | IC | C | 07 | PA | ME | 010 | 06 | BILL 8 | B08 | S2 | CI | R00 | ACF07 | MEP | 010 |  |  | 2n |  |  |  |  |  |  |  |  |
| I07PA09503C0 |  | IC-07 ; Ceiling closure - ACT/Gypsum (Public Area) | 24d | 2012-09-22 | 2012-10-20 | I07PA01006C0, I07PA21115C0, I07PA26005C0, I07PA27001C0, I07PA27002C0, IAFOA09509C1 FF, I07PA09701C0, I07PA23021C0, I07PA26053C0, I07PA26007C0 |  |  |  |  | 26.32d | 0d | ASSORTED CEILING FINISH [426.19 h]; CEILING GYPSUM [58.22 h]; ASSORTED CEILING FINISH [693 m2]; CEILING GYPSUM [177 m2]; Cost |  |  |  |  |  |  | 324 | 953 | I07PA09503C0 |  |  |  | IC | C | 07 | PA | CE | 095 | 03 | BILL 8 | B08 | S2 | 02 | R00 | ACF06 |  | 095 |  |  |  |  |  |  |  |  |  |  | R3 |
| I07PA11001C0 |  | IC-07 ; Wall Protection (WP, CG, WG, FCG) (Public Area) | 24d | 2012-09-22 | 2012-10-20 | I07PA09701C0, I07PA09903C0 SS |  |  |  |  | 56.33d | 30d | FF&E [53 h]; Cost |  |  |  |  |  |  | 326 | 1001 | I07PA11001C0 |  |  |  | IC | C | 07 | PA | WF | 110 | 01 | BILL 8 | B08 | S2 | 03 | R00 | ACF08 |  | b |  |  |  |  |  |  |  |  |  |  |  |
| I07PA11009C0 |  | IC-07 ; Signage (Public Area) | 15d | 2012-09-22 | 2012-10-09 | I07PA09701C0 |  |  |  |  | 65.33d | 39d | SIGNAGES [167 h]; SIGNAGES [167.03 no]; Cost |  |  |  |  |  |  | 322 | 951 | I07PA11009C0 |  |  |  | IC | C | 07 | PA | SA | 110 | 09 | BILL 8 | B08 | S2 | 09 | R00 | ACF08 |  | c |  |  |  |  |  |  |  |  | 08 |  |  |
| I07PA09907C0 |  | IC-07 ; Ceiling Final paint (Public Area) | 0d | 2012-10-20 | 2012-10-20 | I07PA09601C0 SS+24d, I07PA09905C0, I07PA09602C0 SS+24d, I07PA09503C0 |  |  |  |  | 56.33d | 30d | Cost |  |  |  |  |  |  | 331 | 959 | I07PA09907C0 |  |  |  | IC | C | 07 | PA | PA | 099 | 07 | BILL 8 | B08 | S2 | 02 | R00 | ACF06 |  | 099 |  |  |  |  |  |  |  |  |  |  |  |
| I07PA26019C0 |  | IC-07 ; Final Fix, Inst of Switch/Sockets (Public Area) | 18d | 2012-10-20 | 2012-11-12 | I07PA09901C0, I07PA09503C0 |  |  |  |  | 26.32d | 0d | ELECTRICAL [164.4 h]; Cost |  |  |  |  |  |  |  |  | I07PA26019C0 |  |  |  | IC | C | 07 | PA | ME | 260 | 19 | BILL 8 | B08 | S2 | FF | R00 | ACF07 | MEP | 260 |  |  | FF |  |  |  |  |  |  |  |  |

| ID | WBS | Activity | Type | Duration | Start | Finish | Predecessors | Complete | Remaining | Planned start | Planned finish | Total float | Free float | Resources | change id | CCAD BUILDING(SET) | CCAD PHASE(SET) | CCAD FLOOR(SET) | CCAD ZONE(SET) | CCAD WORK(SET) | CCAD SECTION(SET) | CCAD SERIAL No.(SET) | CCAD CBS(SET) | CCAD BILL(SET) | CCAD HANDOVER(SET) | CCAD TAG(SET) | CCAD REV(SET) | CCADACF (SET) | CCAD SSCF | RENZ % COMPLETE | Actual Cost | Phase | Area/ Department | Grids | Are | Weight & Nos | Process | Levels | CCAD CSA | Claimed This Month | user_number8 | user_integer1 | user_integer2 | user_number7 | P_811 | P_711 | U% | Change Order # | NEW ACTIVITY ID |
| --- | --- | --- | --- | --- | --- | --- | --- | --- | --- | --- | --- | --- | --- | --- | --- | --- | --- | --- | --- | --- | --- | --- | --- | --- | --- | --- | --- | --- | --- | --- | --- | --- | --- | --- | --- | --- | --- | --- | --- | --- | --- | --- | --- | --- | --- | --- | --- | --- | --- |
|  | 10 | **Precommissioning Tesing & snagging (Corridor, Central Station)** |  |  | 2012-11-12 | 2012-12-17 |  |  |  |  |  |  |  |  |  |  |  |  |  |  |  |  |  |  |  |  |  |  |  |  |  |  |  |  |  |  |  |  |  |  |  |  |  |  |  |  |  |  |  |
| I07TS01806C0 |  | IC-07 ; MEP de-snag, FIREM sign-off |  | 12d | 2012-11-12 | 2012-11-27 | I07PA26015C0, I07PA21113C0, I07PA23019C0, I07PA26017C0, I07PA26003C0, I07PA27030C0, I07PA40303C0, I07PA26019C0 |  |  |  |  | 26.32d | 0d | TESTING & COMMISSIONING [510 h]; Cost | I07TS01801C0 | IC | C | 07 | TS | SC | 018 | 01 | BILL 8 | B08 | S2 | 01 | R00 | ACF07 | 018 |  |  |  |  |  |  |  |  |  |  |  |  |  |  |  |  |  |  |  |  |
| I07TS01810C0 |  | IC-07 ; Touch-up & Clean / JV inspection /CIR /De-snag |  | 16.25d | 2012-11-27 | 2012-12-17 | I07CO04401C0, I07CO04402C0, I07CO04403C0, I07CO04405C0, I07CO04406C0, I07PA05501C0, I07PA08103C0, I07PA08107C0, I07PA08709C0, I07PA09201C0, I07PA09203C0, I07PA09205C0, I07PA09501C0, I07PA09503C0, I07PA09601C0, I07PA09701C0, I07PA09901C0, I07PA09903C0, I07PA09905C0, I07PA09907C0, I07PA11001C0, I07PA11009C0, I07PA21113C0, I07PA23019C0, I07PA26003C0, I07PA26015C0, I07PA26017C0, I07PA26019C0, I07PA27030C0, I07PA40303C0, I07TS01806C0, I07PA09602C0 |  |  |  |  | 26.32d | 0d | TESTING & COMMISSIONING [128 h]; Cost | I07TS01802C0 | IC | C | 07 | TS | SC | 018 | 02 | BILL 8 | B08 | S2 | 02 | R00 | ACF07 | 018 |  |  |  |  |  |  |  |  |  |  |  |  |  |  |  |  |  |  |  |  |
| I07TS01814C0 |  | IC-07 ; Consultant's final de-snag inspection |  | 0d | 2012-12-17 | 2012-12-17 | I07TS01810C0 |  |  |  |  | 26.32d | 5.33d | Cost | I07TS01803C0 | IC | C | 07 | TS | SC | 018 | 03 | BILL 8 | B08 | S2 | 03 | R00 | ACF07 | 018 |  |  |  |  |  |  |  |  |  |  |  |  |  |  |  |  |  |  |  |  |
|  | 08 | **Level 8** |  |  | 2010-12-01 | 2012-12-24 |  |  |  |  |  |  |  |  |  |  |  |  |  |  |  |  |  |  |  |  |  |  |  |  |  |  |  |  |  |  |  |  |  |  |  |  |  |  |  |  |  |  |  |
|  | 01 | **Structure & Envelopment** |  |  | 2010-12-01 | 2012-05-12 |  |  |  |  |  |  |  |  |  |  |  |  |  |  |  |  |  |  |  |  |  |  |  |  |  |  |  |  |  |  |  |  |  |  |  |  |  |  |  |  |  |  |  |
| I08SB03303C0 |  | IC-08 ; Corewall Concrete (Zone SB) |  | 3d | 2010-12-01 A | 2010-12-23 A | I07SB03303C0 | 100% |  | 2011-01-13 | 2011-01-16 |  |  | CONCRETE [8712 h]; CONCRETE [219 m3]; Cost | I08SB03303C0 | IC | C | 08 | SB | CT | 033 | 03 | BILL 8 | B08 | S2 | 04 | R00 | ACF03 | 033 | 100 |  |  |  |  |  |  |  |  |  |  |  |  |  |  |  |  |  |  |  |
| I08SE03305C0 |  | IC-08 ; Corewall Concrete (Zone SE) |  | 5d | 2010-12-01 A | 2010-12-23 A | I07SE03305C0 | 100% |  | 2011-01-19 | 2011-01-24 |  |  | CONCRETE [2064 h]; CONCRETE [52 m3]; Cost | I08SE03305C0 | IC | C | 08 | SE | CT | 033 | 05 | BILL 8 | B08 | S2 | 04 | R00 | ACF03 | 033 | 100 |  |  |  |  |  |  |  |  |  |  |  |  |  |  |  |  |  |  |  |
| I08S105101C0 |  | IC-08 ; Erection of Structural Steel of 8th Floor (Zone S1) |  | 5d | 2010-12-22 A | 2011-03-29 A | I07S105103C0, I08SB03303C0 | 100% |  | 2011-01-29 | 2011-02-03 |  |  | STRUCTURAL STEEL [11581 h]; STRUCTURAL STEEL [423 T(Fe)]; Cost | I08S105101C0 | IC | C | 08 | S1 | ST | 051 | 01 | BILL 8 | B08 | S2 | 01 | R00 | ACF03 | 051 | 100 | 1957343.25 | Z2 | IC | 6T | K1 | A8A | EREC | 6FLR | ST |  |  |  |  |  |  |  |  |  |  |
| I08S105103C0 |  | IC-08 ; Alignment & welding of 8th Floor steels (Zone S1) |  | 5d | 2011-01-09 A | 2011-05-30 A | I08S105101C0 SS+4d | 100% |  | 2011-02-02 | 2011-02-08 |  |  | STRUCTURAL STEEL [522 h]; Cost | I08S105103C0 | IC | C | 08 | S1 | ST | 051 | 03 | BILL 8 | B08 | S2 | 02 | R00 | ACF03 | 051 | 100 |  | Z2 | IC | 6T | K1 | A8A | EREC | 6FLR | ST |  |  |  |  |  |  |  |  |  |  |
| I08S205101C0 |  | IC-08 ; Erection of Structural Steel of 8th Floor (Zone S2) |  | 6.48d | 2011-01-15 A | 2011-05-30 A | I07S205103C0, I08SE03305C0 | 100% |  | 2011-03-20 | 2011-03-27 |  |  | STRUCTURAL STEEL [10906 h]; STRUCTURAL STEEL [398 T(Fe)]; Cost | I08S205101C0 | IC | C | 08 | S2 | ST | 051 | 01 | BILL 8 | B08 | S2 | 01 | R00 | ACF03 | 051 | 100 |  | Z2 | IC | 6T | K1 | A8A | EREC | 6FLR | ST |  |  |  |  |  |  |  |  |  |  |
| I08S205103C0 |  | IC-08 ; Alignment & welding of 8th Floor (Zone S2) |  | 10d | 2011-01-24 A | 2011-05-30 A | I08S205101C0 | 100% |  | 2011-03-28 | 2011-04-09 |  |  | STRUCTURAL STEEL [1101 h]; Cost | I08S205103C0 | IC | C | 08 | S2 | ST | 051 | 03 | BILL 8 | B08 | S2 | 02 | R00 | ACF03 | 051 | 100 |  | Z2 | IC | 6T | K1 | A8A | EREC | 6FLR | ST |  |  |  |  |  |  |  |  |  |  |
| I08S105305C0 |  | IC-08 ; Metal Decking Lvl- 8 (Zone S1) |  | 14d | 2011-04-06 A | 2011-04-20 A | I08S105103C0, IR8S105101C0 | 100% |  | 2011-03-06 | 2011-03-22 |  |  | METAL DECKING [1095 h]; METAL DECKING [1386 m2]; Cost | I08S105305C0 | IC | C | 08 | S1 | ST | 053 | 05 | BILL 8 | B08 | S2 | 03 | R00 | ACF03 | 053 | 100 |  | Z2 | IC | 6T | K1 | A8A | MDEC | 6FLR | ST |  |  |  |  |  |  |  |  |  |  |
| I08S205305C0 |  | IC-08 ; Metal Decking Lvl - 8 (Zone S2) |  | 12d | 2011-04-10 A | 2011-05-30 A | I08S205103C0, IR8S205101C0 | 100% |  | 2011-04-10 | 2011-04-24 |  |  | METAL DECKING [2264 h]; METAL DECKING [2866 m2]; Cost | I08S205305C0 | IC | C | 08 | S2 | ST | 053 | 05 | BILL 8 | B08 | S2 | 03 | R00 | ACF03 | 053 | 100 |  | Z2 | IC | 6T | K1 | A8A | MDEC | 6FLR | ST |  |  |  |  |  |  |  |  |  |  |
| I08S103399C0 |  | IC-08 ; Concrete on Metal Decking Lvl- 8 (Zone S1) |  | 10d | 2011-04-24 A | 2011-05-30 A | I08S105305C0 | 100% |  | 2011-03-22 | 2011-04-03 |  |  | CONCRETE [13320 h]; CONCRETE [335 m3]; Cost | I08S105335C0 | IC | C | 08 | S1 | CT | 033 | 99 | BILL 8 | B08 | S2 | 08 | R00 | ACF03 | 033 | 100 |  | Z2 | IC | 6T | K1 | A8A | MDEC | 6FLR |  |  |  |  |  |  |  |  |  |  |  |
| I08S107807C0 |  | IC-08 ; Cementitious Fire proofing at Lvl 8 (Zone S1) |  | 9.98d | 2011-05-15 A | 2011-06-30 A | IR8S103399C0 | 100% |  | 2011-06-16 | 2011-06-27 |  |  | CEMENTITIOUS FIREPROOFING [1081 h]; CEMENTITIOUS FIREPROOFING [2161 m2]; Cost | I08S107807C0 | IC | C | 08 | S1 | ST | 078 | 07 | BILL 8 | B08 | S2 | 04 | R00 | ACF03 | 078 | 98 |  | Z2 | IC | 6T | K1 | A8A | FIRE | 6FLR | ST | 3780.34 |  |  |  |  |  |  |  |  |  |
| I08S203399C0 |  | IC-08 ; Concrete on Metal Decking Lvl - 8 (Zone S2) |  | 10d | 2011-05-15 A | 2011-06-02 A | I08S205305C0 | 100% |  | 2011-06-06 | 2011-06-18 |  |  | CONCRETE [13320 h]; CONCRETE [335 m3]; Cost | I08S205335C0 | IC | C | 08 | S2 | CT | 033 | 99 | BILL 8 | B08 | S2 | 08 | R00 | ACF03 | 033 | 90 |  | Z2 | IC | 6T | K1 | A8A | MDEC | 6FLR |  | 34595.11 |  |  |  |  |  |  |  |  |  |
| I08S207807C0 |  | IC-08 ; Cementitious Fire proofing at Lvl 8 (Zone S2) |  | 14d | 2011-05-15 A | 2011-07-18 A | IR8S203399C0 | 100% |  | 2011-07-04 | 2011-07-20 |  |  | CEMENTITIOUS FIREPROOFING [2234 h]; CEMENTITIOUS FIREPROOFING [4467 m2]; Cost | I08S207807C0 | IC | C | 08 | S2 | ST | 078 | 07 | BILL 8 | B08 | S2 | 04 | R00 | ACF03 | 078 | 75 |  | Z2 | IC | 6T | K1 | A8A | FIRE | 6FLR | ST | 97697.55 |  |  |  |  |  |  |  |  |  |
| I08CO04403C0 |  | IC-08 ; C2 Bracket (Common Zone) |  | 90d | 2011-07-01 A | 2011-10-10 | I08S107807C0, I08S207807C0 | 90% | 9d | 2011-06-30 | 2011-10-16 | 18.7d | 0d | FACADE CURTAIN WALL 2 [383 h]; Cost | I08CO04403C0 | IC | C | 08 | CO | FA | 044 | 03 | BILL 8 | B08 | S2 | FC2 | R00 | ACF05 | 044 |  |  |  |  |  |  |  |  |  | FA |  | 0 | 0 | 0 | 0 | 35 | 15 | 90 |  |  |
| I08CO04405C0 |  | IC-08 ; C2 Glazing (Common Zone) |  | 72d | 2011-08-10 A | 2011-10-20 | I08CO04406C0 SS, I08GN02604C0 FF, I08CO04406C0 FF, I07CO04405C0 SS | 80% | 14.4d | 2011-08-24 | 2011-11-22 | 63d | 5.4d | FACADE CURTAIN WALL 2 [2594.9 h]; FACADE CURTAIN WALL 2 [829.5 m2]; FACADE TOTAL QUANTITY m2 [829.5 m2]; Cost | I08CO04405C0 | IC | C | 08 | CO | FA | 044 | 05 | BILL 8 | B08 | S2 | FC2 | R00 | ACF05 | 044 |  |  |  |  |  |  |  |  |  | FA |  | 0 | 0 | 0 | 0 | 20 | 0 | 80 |  |  |
| I08CO04406C0 |  | IC-08 ; C2 Transom & Mullion (Common Zone) |  | 72d | 2011-08-10 A | 2011-10-20 | I08CO04403C0 SS, I07CO04405C0 FF | 80% | 14.4d | 2011-08-24 | 2011-11-22 | 63d | 0d | FACADE CURTAIN WALL 2 [1530.6 h]; Cost | I08CO04406C0 | IC | C | 08 | CO | FA | 044 | 06 | BILL 8 | B08 | S2 | FC2 | R00 | ACF05 | 044 |  |  |  |  |  |  |  |  |  | FA |  | 0 | 0 | 0 | 0 | 20 | 0 | 80 |  |  |
| I08GN02604C0 |  | IC-08 ; Temporary Enclosure | level of effort | 122d | 2011-09-05 A | 2012-04-21 | I08SL09203C0 SS, I08P109203C0 SS, I08P209203C0 SS, I08TR09203C0 SS, I08PA09203C0 SS |  | 167.5d | 2011-09-01 | 2012-01-28 | 108.75d | 0d | Labor General [0.6 h]; Cost |  | IC | C | 08 | GEN | FA | GEN |  |  | B08 |  | TE | R00 | ACF05 | 010 |  |  |  |  |  |  |  |  |  | FA |  |  |  |  |  |  |  |  |  |  |
| I08CO04415C0 |  | IC-08 ; SG Catwalk Installation (Common Zone) |  | 89d | 2011-10-22 | 2012-02-09 | IEXCO04403C0 SS, I07CO04415C0 SS |  |  |  |  | 123d | 108.3d | Labor General [5452.4 h]; Cost | I05CO04411C0 | IC | C | 08 | CO | FA | 044 | 11 | BILL 9 | B08 | S2 | SG | R00 | ACF05 | 044 |  |  |  |  |  |  |  |  |  | FA |  |  |  |  |  |  |  |  |  |  |
| I08SE05509C0 |  | IC-08 ; Steel Staircase & welding/bolting (Stair F5 & 6) (Zone SE) |  | 6d | 2011-11-16 | 2011-11-23 | I07SE05509C0, I08SE03305C0 |  |  |  |  | 127.31d | 106.31d | STRUCTURAL STEEL [7 T(Fe)]; STRUCTURAL STEEL [91 h]; Cost | IP3SE03305C0 | IC | C | 08 | SE | SW | 055 | 05 | BILL 8 | B08 | S2 | 01 | R00 | ACF03 | 055 |  |  |  |  |  |  |  |  |  | ST |  |  |  |  |  |  |  |  |  |  |
| I08CO04401C0 |  | IC-08 ; S1 Ex. partitions (Common Zone) |  | 26d | 2012-03-21 | 2012-04-21 | I07CO04401C0 SS+6d, I08GN02604C0 FF, AAFCI04401R02 FS+148d |  |  |  |  | 108.75d | 0d | PARTITIONS [2115 m]; FACADE STONE PANEL 1 [251.3 h]; Cost | CP2CO04401C0 | IC | C | 08 | CO | FA | 044 | 01 | BILL 8 | B08 | S1 | FS1 | R00 | ACF05 | 044 |  |  |  |  |  |  |  |  |  | FA |  |  |  |  |  |  |  |  | 164 | 87 |
| I08CO04402C0 |  | IC-08 ; S1 onyx stone facade (Common Zone) |  | 18.03d | 2012-04-21 | 2012-05-12 | I08CO04401C0, AAFCI04401R02 FS+148d |  |  |  |  | 189.47d | 144.72d | FACADE TOTAL QUANTITY m2 [283 m2]; FACADE METAL PANEL 2 [283 m2]; FACADE STONE PANEL 1 [1172.6 h]; Cost | CP2CO04411C0 | IC | C | 08 | CO | FA | 044 | 11 | BILL 8 | B08 | S1 | FS1 | R00 | ACF05 | 044 |  |  |  |  |  |  |  |  |  | FA |  |  |  |  |  |  |  |  | 167 | 90 |
| I08CO04455C0 |  | IC-08 ; S1 Inner Side of External Partition (Common Zone) |  | 12d | 2012-04-21 | 2012-05-05 | I08CO04401C0, I08PA09205C0 SS, AAFCI04401R02 FS+148d |  |  |  |  | 153.5d | 127.5d | FACADE STONE PANEL 1 [251.3 h]; Cost | DP3CO04415C0 | IC | C | 08 | CO | FA | 044 | 15 | BILL 5 | B08 | S1 | FS1 | R00 | ACF05 | 044 |  |  |  |  |  |  |  |  |  | FA |  |  |  |  |  |  |  |  |  |  |

| ID | WBS | Activity | Duration | Start | Finish | Predecessors | Complete | Remaining | Planned start | Planned finish | Total float | Free float | Resources | Cost | Actual cost | change id | July2011 Target% Complete | Claimed This Month | N_% | P_811 | P_711 | U% | CCAD BUILDING(SET) | CCAD PHASE(SET) | CCAD FLOOR(SET) | CCAD ZONE(SET) | CCAD WORK(SET) | CCAD SECTION(SET) | CCAD SERIAL No.(SET) | CCAD SUB ZONE MEP(SET) | CCAD CBS(SET) | CCAD BILL(SET) | CCAD HANDOVER(SET) | CCAD TAG(SET) | CCAD REV(SET) | CCADACF (SET) | CCAD CSA | CCAD SSCF | Act Selector % | user_number8 | user_integer1 | user_integer2 | user_number7 | Change Order # | NEW ACTIVITY ID | FILTER | CCAD DIVISION(SET) | CCAD MEQ |
| --- | --- | --- | --- | --- | --- | --- | --- | --- | --- | --- | --- | --- | --- | --- | --- | --- | --- | --- | --- | --- | --- | --- | --- | --- | --- | --- | --- | --- | --- | --- | --- | --- | --- | --- | --- | --- | --- | --- | --- | --- | --- | --- | --- | --- | --- | --- | --- | --- |
|  | 02 | **Slp Suite, On-CallL Suite, Conf, Lng** |  | 2011-06-05 | 2012-12-24 |  |  |  |  |  |  |  |  |  |  |  |  |  |  |  |  |  |  |  |  |  |  |  |  |  |  |  |  |  |  |  |  |  |  |  |  |  |  |  |  |  |  |  |
| I08SL23001C0 |  | IC-08 ; 1st Fix, Inst. of Supports for MEP (Slp Suite) | 90d | 2011-06-05 A | 2011-10-16 | I08S107807C0, I08S207807C0 | 85% | 13.5d | 2011-06-05 | 2011-09-21 | 34.4d | 0d | MECHANICAL [577.2 h]; Cost [32540.2 AED] | 32,540.18 | 27,659.15 | I08SL23001C0 | 30 | 11323.98 | 30 | 80 | 30 | 85 | IC | C | 08 | SL | ME | 230 | 01 | 1S | BILL 8 | B08 | S2 | 1F | R00 | ACF04 | MEP | 230 | M1F |  |  |  |  |  |  |  |  |  |
| I08SL22019C0 |  | IC-08 ; 1st Fix, Inst of Drainage pipe (ceiling) (Slp Suite) | 84d | 2011-06-14 A | 2011-12-10 | I08SL23001C0, I08SL26013C0 SS+14d | 50% | 42d | 2011-08-15 | 2011-11-28 | 42.9d | 0d | PLUMBING [630 h]; Cost [34080.3 AED] | 34,080.3 | 17,040.15 | I08SL22019C0 | 25 | 7901.45 | 35 | 30 | 20 | 50 | IC | C | 08 | SL | ME | 220 | 19 | 1S | BILL 8 | B08 | S2 | 1F | R00 | ACF04 | MEP | 220 | M1F | 0 | 0 | 0 | 0 |  |  |  |  |  |
| I08SL21111C0 |  | IC-08 ; 1st Fix, Inst of Sprinkler main pipe (Slp Suite) | 84d | 2011-06-19 A | 2011-10-31 | I08SL22005C0 SS+14d, I08SL23001C0 | 85% | 12.6d | 2011-09-14 | 2011-12-27 | 42.9d | 0d | MECHANICAL [264 h]; Cost [14398.4 AED] | 14,398.38 | 12,238.62 | I08SL21111C0 | 45 | 1671.29 | 25 | 30 | 10 | 85 | IC | C | 08 | SL | ME | 211 | 11 | 1S | BILL 8 | B08 | S2 | 1F | R00 | ACF04 | MEP | 211 | M1F | 0 | 0 | 0 | 0 |  |  |  |  |  |
| I08SL09201C0 |  | IC-08 ; Metal Studs (Slp Suite) | 42d | 2011-06-21 A | 2011-11-14 | I08SL23001C0 SS, I08CO04405C0 FF, I08CO04406C0 FF | 15% | 35.7d | 2011-07-18 | 2011-09-07 | 45.3d | 0d | PARTITIONS [2483 h]; PARTITIONS - Metal Studs [254 m]; Cost |  |  | I08SL09201C0 |  | 12852.48 |  | 15 | 10 |  | IC | C | 08 | SL | PT | 092 | 01 |  | BILL 8 | B08 | S2 | 1F | R00 | ACF06 | GP | 092 | PMS |  |  |  |  | 313 | 944 |  |  |  |
| I08SL21117C0 |  | IC-08 ; 1st Fix, Inst of Sprinkler branch pipe (Slp Suite) | 84d | 2011-07-10 A | 2011-11-30 | I08SL09201C0, I08SL21111C0 | 85% | 12.6d | 2011-11-10 | 2012-02-21 | 152.7d | 131.7d | MECHANICAL [609.6 h]; Cost [33303.7 AED] | 33,303.68 | 28,308.12 | I08SL21117C0 |  |  | 20 | 30 | 10 | 85 | IC | C | 08 | SL | ME | 211 | 17 | 1S | BILL 8 | B08 | S2 | 1F | R00 | ACF04 | MEP | 211 | M1F | 0 | 0 | 0 | 0 |  |  |  |  |  |
| I08SL26013C0 |  | IC-08 ; 1st Fix, Inst of Cable Tray (Slp Suite) | 90d | 2011-07-10 A | 2011-11-09 | I08S107807C0, I08S207807C0, I08SL23001C0, I08SL27010C0 SS+10d | 80% | 18d | 2011-08-21 | 2011-12-12 | 42.9d | 0d | ELECTRICAL [205.2 h]; Cost [11036 AED] | 11,035.96 | 8,828.76 | I08SL26013C0 | 75 |  | 30 | 50 | 20 | 50 | IC | C | 08 | SL | ME | 260 | 13 | 1S | BILL 8 | B08 | S2 | 1F | R00 | ACF04 | MEP | 260 | M1F | 0 | 0 | 0 | 0 |  |  |  |  |  |
| I08SL27010C0 |  | IC-08 ; 1st Fix, Inst of Trunking for ELV system (Slp Suite) | 90d | 2011-08-10 A | 2011-09-29 A | I08S107807C0, I08S207807C0, I08SL23001C0, I08SL26001C0 SS+12d | 100% |  | 2011-09-10 | 2011-12-29 |  |  | ELECTRICAL [914.4 h]; Cost [47960 AED] | 47,960.04 | 47,960.04 | I08SL27010C0 | 5 |  |  | 50 | 0 |  | IC | C | 08 | SL | ME | 270 | 10 | 1S | BILL 8 | B08 | S2 | 1F | R00 | ACF04 | MEP | 270 | M1F |  |  |  |  |  |  | zero |  |  |
| I08SL22005C0 |  | IC-08 ; 1st Fix, Inst of Water supply pipe (ceiling) (Slp Suite) | 54d | 2011-09-05 A | 2011-12-18 | I08SL22019C0 SS+10d, I08SL23001C0 | 10% | 48.6d | 2011-10-10 | 2011-12-18 | 42.9d | 0d | PLUMBING [1670.4 h]; Cost [90220.7 AED] | 90,220.67 | 9,022.07 | I08SL22005C0 | 25 |  |  |  |  |  | IC | C | 08 | SL | ME | 220 | 05 | 1S | BILL 8 | B08 | S2 | 1F | R00 | ACF04 | MEP | 220 | M1F |  |  |  |  |  |  | zero |  |  |
| I08SL23017C0 |  | IC-08 ; 1st Fix, Inst of CHW pipe (Slp Suite) | 54d | 2011-09-05 A | 2011-12-05 | I08SL21111C0 SS+14d, I08SL23001C0 | 30% | 37.8d | 2011-10-26 | 2012-01-04 | 42.9d | 0d | MECHANICAL [2832 h]; Cost [154640 AED] | 154,640.47 | 46,392.14 | I08SL23017C0 | 45 |  |  |  |  | 15 | IC | C | 08 | SL | ME | 230 | 17 | 1S | BILL 8 | B08 | S2 | 1F | R00 | ACF04 | MEP | 230 | M1F |  |  |  |  |  |  | zero |  |  |
| I08SL23023C0 |  | IC-08 ; 1st Fix, Inst of Main Ducting (Slp Suite) | 66d | 2011-09-05 A | 2012-02-07 | I08SL23001C0 SS+12d, I08SL23017C0 | 20% | 52.8d | 2012-01-04 | 2012-03-22 | 42.9d | 0d | MECHANICAL [7574.4 h]; Cost [413624 AED] | 413,624.26 | 82,724.85 | I08SL23023C0 | 25 |  |  |  |  | 20 | IC | C | 08 | SL | ME | 230 | 23 | 1S | BILL 8 | B08 | S2 | 1F | R00 | ACF04 | MEP | 230 | M1F |  |  |  |  |  |  | zero |  |  |
| I08SL26001C0 |  | IC-08 ; 1st Fix, Inst of Trunking/Conduiting (Slp Suite) | 48d | 2011-09-26 A | 2011-12-05 | I08S107807C0, I08S207807C0, I08SL23001C0 | 20% | 38.4d | 2011-09-26 | 2011-11-24 | 34.4d | 0d | ELECTRICAL [397.2 h]; Cost [20466.7 AED] | 20,466.68 | 4,093.34 | I08SL26001C0 | 30 | 1187.84 |  |  |  |  | IC | C | 08 | SL | ME | 260 | 01 | 1S | BILL 8 | B08 | S2 | 1F | R00 | ACF04 | MEP | 260 | M1F |  |  |  |  |  |  | zero |  |  |
| I08SL08103C0 |  | IC-08 ; Door Frames (Slp Suite) | 36d | 2011-11-14 | 2011-12-28 | I08SL09201C0, GNHE08101C0 FS+69d |  |  |  |  | 99.3d | 78.3d | ASSORTED DOORS [155 h]; Cost |  |  | I08SL08103C0 |  |  |  |  |  |  | IC | C | 08 | SL | DO | 081 | 03 |  | BILL 8 | B08 | S2 | DF | R00 | ACF06 |  | 081 |  |  |  |  |  | 316 | 947 |  | 08 |  |
| I08SL09203C0 |  | IC-08 ; Partitions 1st face (Slp Suite) | 36d | 2011-11-14 | 2011-12-28 | I08SL09201C0 |  |  |  |  | 57.3d | 36.3d | PARTITIONS [254 m]; PARTITIONS [1934 h]; Cost |  |  | I08SL09203C0 |  |  |  |  |  |  | IC | C | 08 | SL | PT | 092 | 03 |  | BILL 8 | B08 | S2 | 2F | R00 | ACF06 | GP | 092 | P1F |  |  |  |  | 314 | 945 |  |  |  |
| I08SL22011C0 |  | IC-08 ; 2nd Fix, Drainage/Water pipe (wall) (Slp Suite) | 48d | 2011-11-14 | 2012-01-12 | I08SL09201C0 |  |  |  |  | 45.3d | 0d | PLUMBING [630 h]; Cost |  |  | I08SL22011C0 | 20 |  |  |  |  |  | IC | C | 08 | SL | ME | 220 | 11 | 2n | BILL 8 | B08 | S2 | 2F | R00 | ACF07 | MEP | 220 |  |  |  |  |  |  |  | zero |  |  |
| I08SL26009C0 |  | IC-08 ; 2nd Fix, Inst of Wall conduites (Slp Suite) | 48d | 2011-11-14 | 2012-01-12 | I08SL09201C0 |  |  |  |  | 45.3d | 0d | ELECTRICAL [397.2 h]; Cost |  |  | I08SL26009C0 | 20 |  |  |  |  |  | IC | C | 08 | SL | ME | 260 | 09 | 2n | BILL 8 | B08 | S2 | 2F | R00 | ACF07 | MEP | 260 |  |  |  |  |  |  |  | zero |  |  |
| I08SL23009C0 |  | IC-08 ; 2nd Fix, Inst of VAV'S CHW connection (Slp Suite) | 48d | 2011-12-05 | 2012-01-31 | I08SL23017C0 |  |  |  |  | 47.7d | 4.8d | MECHANICAL [901.2 h]; Cost |  |  | I08SL23009C0 | 25 |  |  |  |  |  | IC | C | 08 | SL | ME | 230 | 09 | 2n | BILL 8 | B08 | S2 | 2F | R00 | ACF07 | MEP | 230 |  |  |  |  |  |  |  | zero |  |  |
| I08SL27001C0 |  | IC-08 ; 1st Fix, Wiring/ Cabling work (Slp Suite) | 48d | 2011-12-05 | 2012-01-31 | I08SL26001C0, I08SL26013C0, I08SL27010C0 |  |  |  |  | 101.1d | 80.1d | ELECTRICAL [213.6 h]; Cost |  |  | I08SL27001C0 | 25 |  |  |  |  |  | IC | C | 08 | SL | ME | 270 | 01 | 1S | BILL 8 | B08 | S2 | 1F | R00 | ACF04 | MEP | 270 | M1F |  |  |  |  |  |  | zero |  |  |
| I08SL01005C0 |  | IC-08 ; 2nd, Wall Inspection by Consultant (Slp Suite) | 0d | 2012-01-12 | 2012-01-12 | I08SL22011C0, I08SL26009C0 |  |  |  |  | 45.3d | 24.3d | Cost |  |  | I08SL01005C0 |  |  |  |  |  |  | IC | C | 08 | SL | ME | 010 | 05 | 2n | BILL 8 | B08 | S2 | WI | R00 | ACF07 | MEP | 010 |  |  |  |  |  |  |  |  |  |  |
| I08SL05511C0 |  | IC-08 ; Wall reinforcement for MEP/Medical (Slp Suite) | 24d | 2012-01-14 | 2012-02-11 | I08SL09201C0, IAFCI22001R02 FS+72d |  |  |  |  | 21d | 0d | SECONDARY STEEL [47 h]; Cost |  |  | I08SL05511C0 |  |  |  |  |  |  | IC | C | 08 | SL | SW | 055 | 11 |  | BILL 8 | B08 | S2 | 03 | R00 | ACF03 |  | b |  |  |  |  |  |  |  |  |  |  |
| I08SL23008C0 |  | IC-08 ; 1st Fix, Inst of VCD's/FD's (Slp Suite) | 48d | 2012-02-07 | 2012-04-03 | I08SL23023C0 |  |  |  |  | 48.9d | 27.9d | MECHANICAL [910.8 h]; Cost |  |  | I08SL23008C0 |  |  |  |  |  |  | IC | C | 08 | SL | ME | 230 | 08 | 1S | BILL 8 | B08 | S2 | 1F | R00 | ACF04 | MEP | 230 | M1F |  |  |  |  |  |  |  |  |  |
| I08SL23015C0 |  | IC-08 ; 2nd Fix, Insulation of CHW pipe & Duct (Slp Suite) | 54d | 2012-02-07 | 2012-04-10 | I08SL23009C0, I08SL23017C0, I08SL23023C0 |  |  |  |  | 42.9d | 21.9d | MECHANICAL [3075.6 h]; Cost |  |  | I08SL23015C0 |  |  |  |  |  |  | IC | C | 08 | SL | ME | 230 | 15 | 2n | BILL 8 | B08 | S2 | 2F | R00 | ACF07 | MEP | 230 |  |  |  |  |  |  |  |  |  |  |
| I08SL09205C0 |  | IC-08 ; Partitions Closing (Slp Suite) | 42d | 2012-02-12 | 2012-03-31 | I08SL01005C0, I08SL05511C0, I08SL09203C0, I08SL22005C0, I08SL22019C0, IAFOA09210C1 FF, I08SL08103C0 FF |  |  |  |  | 21d | 0d | PARTITIONS [254 m]; PARTITIONS [2496 h]; Cost |  |  | I08SL09205C0 |  |  |  |  |  |  | IC | C | 08 | SL | PT | 092 | 05 |  | BILL 8 | B08 | S2 | FF | R00 | ACF06 | GP | 092 | P2F |  |  |  |  | 315 | 946 |  |  |  |
| I08SL07103C0 |  | IC-08 ; Waterproofing (Slp Suite) | 12d | 2012-04-01 | 2012-04-14 | I08SL08103C0, I08SL09205C0 |  |  |  |  | 109.5d | 0d | THERMAL & MOISTURE [80 h]; THERMAL & MOISTURE [488 m2]; Cost |  |  | I08SL07103C0 |  |  |  |  |  |  | IC | C | 08 | SL | FF | 071 | 03 |  | BILL 8 | B08 | S2 | 01 | R00 | ACF03 |  | 071 |  |  |  |  |  | 105 | 999 |  |  |  |
| I08SL09901C0 |  | IC-08 ; Wall Prime & 1st coat (Slp Suite) | 30d | 2012-04-01 | 2012-05-05 | I08SE05509C0, I08SL09205C0 |  |  |  |  | 21d | 0d | WALL PAINT [468 h]; WALL PAINT [583 m2]; Cost |  |  | I08SL09901C0 |  |  |  |  |  |  | IC | C | 08 | SL | PA | 099 | 01 |  | BILL 8 | B08 | S2 | 01 | R00 | ACF06 |  | 099 |  |  |  |  |  | 328 | 956 |  |  |  |
| I08SL26005C0 |  | IC-08 ; 2nd Fix, Wiring for Power/Lighting/Emergency (Slp Suite) | 48d | 2012-04-01 | 2012-05-26 | I08SL09205C0 |  |  |  |  | 99d | 0d | ELECTRICAL [213.6 h]; Cost |  |  | I08SL26005C0 |  |  |  |  |  |  | IC | C | 08 | SL | ME | 260 | 05 | 2n | BILL 8 | B08 | S2 | 2F | R00 | ACF07 | MEP | 260 |  |  |  |  |  |  |  |  |  |  |
| I08SL26007C0 |  | IC-08 ; 2nd Fix, Cable Pulling (Slp Suite) | 48d | 2012-04-01 | 2012-05-26 | I08SL09201C0 SS+6d, I08SL09205C0 |  |  |  |  | 135d | 114d | ELECTRICAL [2858.4 h]; Cost |  |  | I08SL26007C0 | 20 |  |  |  |  |  | IC | C | 08 | SL | ME | 260 | 07 | 2n | BILL 8 | B08 | S2 | 2F | R00 | ACF07 | MEP | 260 |  |  |  |  |  |  |  | zero |  |  |
| I08SL26053C0 |  | IC-08 ; 2nd Fix, Wiring / Cabling (Slp Suite) | 48d | 2012-04-01 | 2012-05-26 | I08SL09203C0, I08SL09205C0 |  |  |  |  | 39d | 18d | ELECTRICAL [213.6 h]; Cost |  |  | I08SL26053C0 |  |  |  |  |  |  | IC | C | 08 | SL | ME | 260 | 53 | 2n | BILL 8 | B08 | S2 | 2F | R00 | ACF07 | MEP | 260 |  |  |  |  |  | 389 | 977 |  |  |  |
| I08SL09305C0 |  | IC-08 ; Ceramic floor tile (Slp Suite) | 19.5d | 2012-04-15 | 2012-05-07 | I08SL07103C0 |  |  |  |  | 109.5d | 0d | CERAMIC FLOOR TILES [64 h]; CERAMIC FLOOR TILES [33 m2]; Cost |  |  | I08SL09305C0 |  |  |  |  |  |  | IC | C | 08 | SL | FF | 093 | 05 |  | BILL 8 | B08 | S2 | 02 | R00 | ACF06 |  | CT |  |  |  |  |  | 106 | 1000 |  |  |  |
| I08SL26011C0 |  | IC-08 ; 2nd Fix, Inst of Equipment (DB) (Slp Suite) | 66d | 2012-05-03 | 2012-07-19 | I08SL09205C0, I08PA26011C0 SS+3d |  |  |  |  | 42.25d | 0d | ELECTRICAL [1736.4 h]; Cost |  |  | I08SL26011C0 |  |  |  |  |  |  | IC | C | 08 | SL | ME | 260 | 11 | 2n | BILL 8 | B08 | S2 | 2F | R00 | ACF04 | MEP | 260 |  |  |  |  |  |  |  |  |  | E |
| I08SL05501C0 |  | IC-08 ; Handrails & balustrade (Slp Suite) | 30.38d | 2012-05-06 | 2012-06-10 | I08SL09901C0 |  |  |  |  | 68.62d | 47.62d | SECONDARY STEEL [264 h]; Cost |  |  | I08SL05501C0 |  |  |  |  |  |  | IC | C | 08 | SL | SW | 055 | 01 |  | BILL 8 | B08 | S2 | 01 | R00 | ACF03 |  | a |  |  |  |  |  |  |  |  |  |  |
| I08SL09501C0 |  | IC-08 ; Ceiling Grid and Service Tile (Slp Suite) | 36d | 2012-05-06 | 2012-06-17 | I08SL09205C0, I08SL21117C0, I08SL23008C0, I08SL23009C0, I08SL23015C0, I08SL27001C0, IAFCI22002R02 FS+72d, I08SL26053C0 FF, I08SL09901C0 |  |  |  |  | 21d | 0d | CEILING GRID FOR GYPSUM [1504.83 h]; CEILING GRID FOR GYPSUM [128.64 m2]; Cost |  |  | I08SL09501C0 |  |  |  |  |  |  | IC | C | 08 | SL | CE | 095 | 01 |  | BILL 8 | B08 | S2 | 01 | R00 | ACF06 |  | 095 |  |  |  |  |  | 323 | 952 |  |  |  |
| I08SL22025C0 |  | IC-08 ; Final Fix, Inst of Sanitary Ware (Slp Suite) | 36d | 2012-05-07 | 2012-06-19 | I08SL09205C0, I08SL09305C0, A10230 FS+148d |  |  |  |  | 109.5d | 0d | PLUMBING [1315.2 h]; Cost |  |  | I08SL22025C0 |  |  |  |  |  |  | IC | C | 08 | SL | ME | 220 | 25 | FF | BILL 8 | B08 | S2 | FF | R00 | ACF07 | MEP | 220 |  |  |  |  |  |  |  |  |  |  |
| I08SL26015C0 |  | IC-08 ; Final Fix, Termination & Gladding of Cables (Slp Suite) | 36d | 2012-05-27 | 2012-07-08 | I08SL26005C0 |  |  |  |  | 99d | 30d | ELECTRICAL [158.4 h]; Cost |  |  | I08SL26015C0 |  |  |  |  |  |  | IC | C | 08 | SL | ME | 260 | 15 | FF | BILL 8 | B08 | S2 | FF | R00 | ACF07 | MEP | 260 |  |  |  |  |  |  |  |  |  |  |
| I08SL09202C0 |  | IC-08 ; Vertical folding acoustical screen (Slp Suite) | 20d | 2012-06-18 | 2012-07-10 | I08SL09501C0 |  |  |  |  | 139d | 118d | PARTITIONS [861 h]; Cost |  |  | I06SL09201C0 |  |  |  |  |  |  | IC | C | 08 | SL | FI | 092 | 02 |  | BILL 8 | B08 | S2 | 02 | R00 | ACF06 | GP | 092 |  |  |  |  |  | 313 | 944 |  |  |  |
| I08SL09601C0 |  | IC-08 ; Flooring (Terrazzo) (Slp Suite) | 42d | 2012-06-18 | 2012-08-05 | I08SL09501C0, I08SL05501C0 FF |  |  |  |  | 21d | 0d | TERRAZO FLOOR [632 h]; TERRAZO FLOOR [349 m2]; Cost |  |  | I08SL09601C0 |  |  |  |  |  |  | IC | C | 08 | SL | FF | 096 | 01 |  | BILL 8 | B08 | S2 | 07 | R00 | ACF06 |  | TZ |  |  |  |  |  | 326 | 955 |  |  |  |
| I08SL09903C0 |  | IC-08 ; Wall Final Paint (Slp Suite) | 30d | 2012-06-18 | 2012-07-22 | I08SL09901C0, I08SL09905C0, I08SL09501C0 |  |  |  |  | 129d | 84d | WALL PAINT [252 h]; WALL PAINT [314 m2]; Cost |  |  | I08SL09903C0 |  |  |  |  |  |  | IC | C | 08 | SL | PA | 099 | 03 |  | BILL 8 | B08 | S2 | 02 | R00 | ACF06 |  | 099 |  |  |  |  |  | 329 | 957 |  |  |  |
| I08SL09905C0 |  | IC-08 ; Ceiling Prime & 1st coat (Slp Suite) | 0d | 2012-06-18 | 2012-06-18 | I08SL09501C0 |  |  |  |  | 129d | 0d | Cost |  |  | I08SL09905C0 |  |  |  |  |  |  | IC | C | 08 | SL | PA | 099 | 05 |  | BILL 8 | B08 | S2 | 01 | R00 | ACF06 |  | 099 |  |  |  |  |  | 330 | 958 |  |  |  |
| I08SL21115C0 |  | IC-08 ; 2nd Fix, Inst of Sprinkler droppers (Slp Suite) | 48d | 2012-06-18 | 2012-08-12 | I08SL09501C0 |  |  |  |  | 69d | 0d | MECHANICAL [800.4 h]; Cost |  |  | I08SL21115C0 |  |  |  |  |  |  | IC | C | 08 | SL | ME | 211 | 15 | 2n | BILL 8 | B08 | S2 | 2F | R00 | ACF07 | MEP | 211 |  |  |  |  |  |  |  |  |  |  |
| I08SL23021C0 |  | IC-08 ; 2nd Fix, Inst of Flexible Duct & Plenum boxes (Slp Suite) | 48d | 2012-06-18 | 2012-08-12 | I08SL09205C0, I08SL09501C0 |  |  |  |  | 69d | 0d | MECHANICAL [72 h]; Cost |  |  | I08SL23021C0 |  |  |  |  |  |  | IC | C | 08 | SL | ME | 230 | 21 | 2n | BILL 8 | B08 | S2 | 2F | R00 | ACF07 | MEP | 230 |  |  |  |  |  |  |  |  |  |  |
| I08SL26017C0 |  | IC-08 ; Final Fix, Inst of Ceiling rose (Slp Suite) | 36d | 2012-06-18 | 2012-07-29 | I08SL09501C0 |  |  |  |  | 81d | 0d | ELECTRICAL [33.6 h]; Cost |  |  | I08SL26017C0 |  |  |  |  |  |  | IC | C | 08 | SL | ME | 260 | 17 | FF | BILL 8 | B08 | S2 | FF | R00 | ACF07 | MEP | 260 |  |  |  |  |  |  |  |  |  |  |
| I08SL27002C0 |  | IC-08 ; 2nd Fix, Wiring Droppers (Slp Suite) | 36d | 2012-06-18 | 2012-07-29 | I08SL09501C0 |  |  |  |  | 75d | 0d | ELECTRICAL [213.6 h]; Cost |  |  | I08SL27002C0 |  |  |  |  |  |  | IC | C | 08 | SL | ME | 270 | 02 | 2n | BILL 8 | B08 | S2 | 2F | R00 | ACF07 | MEP | 270 |  |  |  |  |  |  |  |  |  |  |
| I08SL27020C0 |  | IC-08 ; 2nd Fix, Inst of ELV Equipment (Panels) (Slp Suite) | 48d | 2012-06-18 | 2012-08-12 | I08SL09205C0, I08SL09501C0 |  |  |  |  | 33d | 0d | ELECTRICAL [1041.6 h]; Cost |  |  | I08SL27020C0 |  |  |  |  |  |  | IC | C | 08 | SL | ME | 270 | 20 | 2n | BILL 8 | B08 | S2 | 2F | R00 | ACF04 | MEP | 270 |  |  |  |  |  |  |  |  |  | E |
| I08SL22021C0 |  | IC-08 ; Final Fix, Terminate Sanitary Ware & Appliances (Slp Suite) | 36d | 2012-06-19 | 2012-07-31 | I08SL22011C0, I08SL22025C0 |  |  |  |  | 109.5d | 88.5d | PLUMBING [1315.2 h]; Cost |  |  | I08SL22021C0 |  |  |  |  |  |  | IC | C | 08 | SL | ME | 220 | 21 | FF | BILL 8 | B08 | S2 | FF | R00 | ACF07 | MEP | 220 |  |  |  |  |  |  |  |  |  |  |
| I08SL21113C0 |  | IC-08 ; Final Fix, Inst of Sprinklers head/ Extinguisher (Slp Suite) | 36d | 2012-06-25 | 2012-08-05 | I08SL09501C0, I08SL21115C0 SS+6d |  |  |  |  | 75d | 6d | MECHANICAL [152.4 h]; Cost |  |  | I08SL21113C0 |  |  |  |  |  |  | IC | C | 08 | SL | ME | 211 | 13 | FF | BILL 8 | B08 | S2 | FF | R00 | ACF07 | MEP | 211 |  |  |  |  |  |  |  |  |  |  |
| I08SL23019C0 |  | IC-08 ; Final Fix, Inst of Grilles & Diffusers (Slp Suite) | 36d | 2012-06-25 | 2012-08-05 | I08SL09501C0, I08SL23021C0 SS+6d |  |  |  |  | 75d | 6d | MECHANICAL [757.2 h]; Cost |  |  | I08SL23019C0 |  |  |  |  |  |  | IC | C | 08 | SL | ME | 230 | 19 | FF | BILL 8 | B08 | S2 | FF | R00 | ACF07 | MEP | 230 |  |  |  |  |  |  |  |  |  |  |
| I08SL26003C0 |  | IC-08 ; Final Fix, Inst of Light fittings (Slp Suite) | 54d | 2012-06-25 | 2012-08-28 | I08SL09501C0, I08SL26017C0 SS+6d |  |  |  |  | 87d | 66d | ELECTRICAL [9577.2 h]; Cost |  |  | I08SL26003C0 |  |  |  |  |  |  | IC | C | 08 | SL | ME | 260 | 03 | FF | BILL 8 | B08 | S2 | FF | R00 | ACF07 | MEP | 260 |  |  |  |  |  |  |  |  |  |  |
| I08SL27030C0 |  | IC-08 ; Final Fix, Inst of ELV device (Detector/Speaker) (Slp Suite) | 36d | 2012-06-25 | 2012-08-05 | I08SL09501C0, I08SL27002C0 SS+6d |  |  |  |  | 75d | 6d | ELECTRICAL [1707.6 h]; Cost |  |  | I08SL27030C0 |  |  |  |  |  |  | IC | C | 08 | SL | ME | 270 | 30 | FF | BILL 8 | B08 | S2 | FF | R00 | ACF07 | MEP | 270 |  |  |  |  |  |  |  |  |  |  |
| I08SL06101C0 |  | IC-08 ; Wood / caseworks (Slp Suite) | 54d | 2012-08-06 | 2012-10-09 | I08CO04405C0, I08SL09501C0, I08SL09601C0, I08SL09901C0, IAFWA00103M0, IAFCI22002R02 FS+190d, IZ9GZ06153R2 FF |  |  |  |  | 21d | 0d | WOOD WORK/CASEWORK [147.29 no]; WOOD WORK/CASEWORK [1182 h]; Cost |  |  | I08SL06101C0 |  |  |  |  |  |  | IC | C | 08 | SL | WO | 061 | 01 |  | BILL 8 | B08 | S2 | WW | R00 | ACF06 |  | 061 |  |  |  |  |  | 332 | 960 |  |  |  |
| I08SL08107C0 |  | IC-08 ; Doors (Slp Suite) | 36d | 2012-08-06 | 2012-09-18 | I08SL08103C0, I08SL09501C0, I08SL09601C0, I08SL09901C0 |  |  |  |  | 61d | 0d | ASSORTED DOORS [420 h]; ASSORTED DOORS [42 no]; Cost |  |  | I08SL08107C0 |  |  |  |  |  |  | IC | C | 08 | SL | DO | 081 | 07 |  | BILL 8 | B08 | S2 | DR | R00 | ACF06 |  | 081 |  |  |  |  |  | 317 | 948 |  | 08 |  |
| I08SL01006C0 |  | IC-08 ; 2nd, Ceiling Inspection by Consultants (Slp Suite) | 0d | 2012-08-13 | 2012-08-13 | I08SL21115C0, I08SL23009C0, I08SL23015C0, I08SL27002C0, I08SL09501C0, I08SL21113C0, I08SL23019C0, I08SL26017C0, I08SL27030C0, I08SL26015C0 |  |  |  |  | 69d | 48d | Cost |  |  | I08SL01006C0 |  |  |  |  |  |  | IC | C | 08 | SL | ME | 010 | 06 | 2n | BILL 8 | B08 | S2 | CI | R00 | ACF07 | MEP | 010 |  |  |  |  |  |  |  |  |  |  |
| I08SL09701C0 |  | IC-08 ; Wall finishes (ST, WD, WC) (Slp Suite) | 36d | 2012-08-13 | 2012-09-25 | I08SL26011C0, I08SL27020C0, IAFCI22002R02 FS+170d, I08SL09601C0 |  |  |  |  | 33d | 0d | ASSORTED WALL FINISH [249 h]; ASSORTED WALL FINISH [286 m2]; Cost |  |  | I08SL09701C0 |  |  |  |  |  |  | IC | C | 08 | SL | WF | 097 | 01 |  | BILL 8 | B08 | S2 | 01 | R00 | ACF06 |  | 097 |  |  |  |  |  | 105 | 1002 |  |  |  |
| I08SL08709C0 |  | IC-08 ; Ironmongery (Slp Suite) | 20d | 2012-09-19 | 2012-10-11 | I08SL08107C0 |  |  |  |  | 61d | 40d | IRONMONGERY [190 h]; IRONMONGERY [19 no]; Cost |  |  | I08SL08709C0 |  |  |  |  |  |  | IC | C | 08 | SL | DO | 087 | 09 |  | BILL 8 | B08 | S2 | IM | R00 | ACF06 |  | 087 |  |  |  |  |  | 322 | 951 |  | 08 |  |
| I08SL11001C0 |  | IC-08 ; Wall Protection (WP, CG, WG, FCG) (Slp Suite) | 24d | 2012-09-26 | 2012-10-23 | I08SL09701C0, I08SL09903C0 SS |  |  |  |  | 51d | 30d | FF&E [30 h]; Cost |  |  | I08SL11001C0 |  |  |  |  |  |  | IC | C | 08 | SL | WF | 110 | 01 |  | BILL 8 | B08 | S2 | 03 | R00 | ACF08 |  | b |  |  |  |  |  | 326 | 1001 |  |  |  |
| I08SL09503C0 |  | IC-08 ; Ceiling closure - ACT/Gypsum (Slp Suite) | 18d | 2012-10-10 | 2012-11-01 | I08SL01006C0, I08SL21115C0, I08SL26005C0, I08SL27001C0, I08SL27002C0, IAFOA09509C1 FF, I08SL06101C0, I08SL09701C0, I08SL23021C0, I08SL26007C0 |  |  |  |  | 21d | 0d | ASSORTED CEILING FINISH [308.73 h]; CEILING GYPSUM [42.23 h]; ASSORTED CEILING FINISH [502 m2]; CEILING GYPSUM [129 m2]; Cost |  |  | I08SL09503C0 |  |  |  |  |  |  | IC | C | 08 | SL | CE | 095 | 03 |  | BILL 8 | B08 | S2 | 02 | R00 | ACF06 |  | 095 |  |  |  |  |  | 324 | 953 |  |  |  |
| I08SL09676C1 |  | IC-08, Carpet Tile Finish (Slp Suite/On Call Suite, Conference, Lng) | 0d | 2012-11-03 | 2012-11-03 | I08SL09903C0 SS, I08SL09907C0 SS |  |  |  |  | 45d | 24d | Cost |  |  |  |  |  |  |  |  |  | IC | C | 08 | SL | FF | 096 |  |  |  | B08 |  |  | R00 | ACF06 | CPT | CPT |  |  |  |  |  |  |  |  |  |  |
| I08SL09907C0 |  | IC-08 ; Ceiling Final paint (Slp Suite) | 0d | 2012-11-03 | 2012-11-03 | I08SL09601C0, I08SL09905C0, I08SL09503C0 |  |  |  |  | 45d | 0d | Cost |  |  | I08SL09907C0 |  |  |  |  |  |  | IC | C | 08 | SL | PA | 099 | 07 |  | BILL 8 | B08 | S2 | 02 | R00 | ACF06 |  | 099 |  |  |  |  |  | 331 | 959 |  |  |  |
| I08SL11003C0 |  | IC-08 ; FF & E (Slp Suite) | 12d | 2012-11-03 | 2012-11-17 | I08SL09601C0, I08SL06101C0, I08SL09503C0 |  |  |  |  | 33d | 12d | FF&E [311 h]; FF&E [165.52 no]; Cost |  |  | I08SL11003C0 |  |  |  |  |  |  | IC | C | 08 | SL | WO | 110 | 03 |  | BILL 8 | B08 | S2 | 04 | R00 | ACF08 |  | a |  |  |  |  |  | 333 | 961 |  |  |  |
| I08SL22027C0 |  | IC-08 ; Final Fix, Inst of All drain (Slp Suite) | 12d | 2012-11-03 | 2012-11-17 | I08SL09305C0, I08SL09503C0 |  |  |  |  | 21d | 0d | PLUMBING [630 h]; Cost |  |  | I08SL22027C0 |  |  |  |  |  |  | IC | C | 08 | SL | ME | 220 | 27 | FF | BILL 8 | B08 | S2 | FF | R00 | ACF07 | MEP | 220 |  |  |  |  |  |  |  |  |  |  |
| I08SL26019C0 |  | IC-08 ; Final Fix, Inst of Switch/Sockets (Slp Suite) | 12d | 2012-11-03 | 2012-11-17 | I08SL09901C0, I08SL09503C0 |  |  |  |  | 21d | 0d | ELECTRICAL [123.6 h]; Cost |  |  | I08SL26019C0 |  |  |  |  |  |  | IC | C | 08 | SL | ME | 260 | 19 | FF | BILL 8 | B08 | S2 | FF | R00 | ACF07 | MEP | 260 |  |  |  |  |  |  |  |  |  |  |

| ID | WBS | Activity | Duration | Start | Finish | Predecessors | Complete | Remaining | Planned start | Planned finish | Total float | Free float | Resources | Cost | Actual cost | change id | CCAD BUILDING(SET) | CCAD PHASE(SET) | CCAD FLOOR(SET) | CCAD ZONE(SET) | CCAD WORK(SET) | CCAD SECTION(SET) | CCAD SERIAL No.(SET) | CCAD CBS(SET) | CCAD BILL(SET) | CCAD HANDOVER(SET) | CCAD TAG(SET) | CCAD REV(SET) | CCADACF (SET) | CCAD SSCF | July2011 Target% Complete | N_% | P_811 | P_711 | U% | CCAD SUB ZONE MEP(SET) | CCAD CSA | Act Selector % | user_number8 | user_integer1 | user_integer2 | user_number7 | Claimed This Month | Change Order # | NEW ACTIVITY ID | R3 Partitions | FILTER | CCAD DIVISION(SET) | CCAD MEQ |
| --- | --- | --- | --- | --- | --- | --- | --- | --- | --- | --- | --- | --- | --- | --- | --- | --- | --- | --- | --- | --- | --- | --- | --- | --- | --- | --- | --- | --- | --- | --- | --- | --- | --- | --- | --- | --- | --- | --- | --- | --- | --- | --- | --- | --- | --- | --- | --- | --- | --- |
|  | 10 | **Precommissioning Tesing & snagging (Slp Suite, On-CallL Suite, Conf, Lng)** |  | 2012-11-18 | 2012-12-24 |  |  |  |  |  |  |  |  |  |  |  |  |  |  |  |  |  |  |  |  |  |  |  |  |  |  |  |  |  |  |  |  |  |  |  |  |  |  |  |  |  |  |  |  |
| I08TS01801C0 |  | IC-08 ; MEP de-snag, FIREM sign-off | 12d | 2012-11-18 | 2012-12-01 | I08SL22025C0, I08SL22027C0, I08SL26015C0, I08SL22021C0, I08SL21113C0, I08SL23019C0, I08SL26017C0, I08SL26003C0, I08SL27030C0, I08SL26019C0 |  |  |  |  | 21d | 0d | TESTING & COMMISSIONING [2040 h]; Cost |  |  | I08TS01801C0 | IC | C | 08 | TS | SC | 018 | 01 | BILL 8 | B08 | S2 | 01 | R00 | ACF07 | 018 |  |  |  |  |  |  |  |  |  |  |  |  |  |  |  |  |  |  |  |
| I08TS01807C0 |  | IC-08 ; Touch-up & Clean / JV inspection /CIR /De-snag | 18d | 2012-12-02 | 2012-12-23 | I08CO04402C0, I08CO04403C0, I08CO04405C0, I08CO04406C0, I08SL05501C0, I08SL05511C0, I08SL06101C0, I08SL07103C0, I08SL08103C0, I08SL08107C0, I08SL08709C0, I08SL09201C0, I08SL09202C0, I08SL09203C0, I08SL09205C0, I08SL09305C0, I08SL09501C0, I08SL09503C0, I08SL09601C0, I08SL09701C0, I08SL09901C0, I08SL09903C0, I08SL09905C0, I08SL09907C0, I08SL11001C0, I08SL11003C0, I08SL21113C0, I08SL22021C0, I08SL22025C0, I08SL22027C0, I08SL23019C0, I08SL26003C0, I08SL26015C0, I08SL26017C0, I08SL26019C0, I08SL27030C0, I08TS01801C0, I08SL09676C1, I08P109677C1 |  |  |  |  | 21d | 0d | TESTING & COMMISSIONING [128 h]; Cost |  |  | I08TS01802C0 | IC | C | 08 | TS | SC | 018 | 02 | BILL 8 | B08 | S2 | 02 | R00 | ACF07 | 018 |  |  |  |  |  |  |  |  |  |  |  |  |  |  |  |  |  |  |  |
| I08TS01811C0 |  | IC-08 ; Consultant's final de-snag inspection | 0d | 2012-12-24 | 2012-12-24 | I08TS01807C0 |  |  |  |  | 21d | 0d | Cost |  |  | I08TS01803C0 | IC | C | 08 | TS | SC | 018 | 03 | BILL 8 | B08 | S2 | 03 | R00 | ACF07 | 018 |  |  |  |  |  |  |  |  |  |  |  |  |  |  |  |  |  |  |  |
|  | 03 | **PAT RM-1** |  | 2011-06-06 | 2012-12-13 |  |  |  |  |  |  |  |  |  |  |  |  |  |  |  |  |  |  |  |  |  |  |  |  |  |  |  |  |  |  |  |  |  |  |  |  |  |  |  |  |  |  |  |  |
| I08P123001C0 |  | IC-08 ; 1st Fix, Inst. of Supports for MEP (PAT RM-1) | 90d | 2011-06-06 A | 2011-10-16 | I08S107807C0 | 85% | 13.5d | 2011-05-31 | 2011-09-17 | 59.92d | 0d | MECHANICAL [577.2 h]; Cost [32540.2 AED] | 32,540.18 | 27,659.15 | I08P123001C0 | IC | C | 08 | P1 | ME | 230 | 01 | BILL 8 | B08 | S2 | 1F | R00 | ACF04 | 230 | 35 | 30 | 80 | 30 | 85 | 1S | MEP | M1F |  |  |  |  |  |  |  |  |  |  |  |
| I08P121111C0 |  | IC-08 ; 1st Fix, Inst of Sprinkler main pipe (PAT RM-1) | 84d | 2011-06-20 A | 2011-10-31 | I08P122005C0 SS+14d, I08P123001C0 | 85% | 12.6d | 2011-09-10 | 2011-12-22 | 82.72d | 0d | MECHANICAL [264 h]; Cost [14398.4 AED] | 14,398.38 | 12,238.62 | I08P121111C0 | IC | C | 08 | P1 | ME | 211 | 11 | BILL 8 | B08 | S2 | 1F | R00 | ACF04 | 211 | 30 | 25 | 30 | 25 | 85 | 1S | MEP | M1F | 0 | 0 | 0 | 0 | 1671.29 |  |  |  |  |  |  |
| I08P122019C0 |  | IC-08 ; 1st Fix, Inst of Drainage pipe (ceiling) (PAT RM-1) | 84d | 2011-06-26 A | 2011-12-10 | I08P123001C0, I08P126013C0 SS+12d | 50% | 42d | 2011-08-10 | 2011-11-22 | 78.53d | 0d | PLUMBING [630 h]; Cost [34080.3 AED] | 34,080.3 | 17,040.15 | I08P122019C0 | IC | C | 08 | P1 | ME | 220 | 19 | BILL 8 | B08 | S2 | 1F | R00 | ACF04 | 220 | 20 | 35 | 30 | 20 | 50 | 1S | MEP | M1F | 0 | 0 | 0 | 0 | 7901.45 |  |  |  |  |  |  |
| I08P109201C0 |  | IC-08 ; Metal Studs (PAT RM-1) | 42d | 2011-06-28 A | 2011-12-21 | I08P123001C0 SS, IAFCI09201R02 FS+72d, I08CO04405C0 FF, I08CO04406C0 FF | 15% | 35.7d | 2011-07-04 | 2011-08-22 | 29.93d | 0d | PARTITIONS [4792 h]; PARTITIONS - Metal Studs [492 m]; Cost |  |  | I08P109201C0 | IC | C | 08 | P1 | PT | 092 | 01 | BILL 8 | B08 | S2 | 1F | R00 | ACF06 | 092 |  |  | 15 | 10 |  |  | GP | PMS |  |  |  |  | 24770.23 | 313 | 944 | R3 |  |  |  |
| I08P121117C0 |  | IC-08 ; 1st Fix, Inst of Sprinkler branch pipe (PAT RM-1) | 84d | 2011-07-10 A | 2012-01-30 | I08P109201C0, I08P121111C0, I08P105503C0 FF+18d | 85% | 12.6d | 2011-11-16 | 2012-02-27 | 113.92d | 84d | MECHANICAL [609.6 h]; Cost [33303.7 AED] | 33,303.68 | 28,308.12 | I08P121117C0 | IC | C | 08 | P1 | ME | 211 | 17 | BILL 8 | B08 | S2 | 1F | R00 | ACF04 | 211 |  | 20 | 30 | 20 | 85 | 1S | MEP | M1F | 0 | 0 | 0 | 0 |  |  |  |  |  |  |  |
| I08P126001C0 |  | IC-08 ; 1st Fix, Inst of Trunking/Conduiting (PAT RM-1) | 72d | 2011-07-10 A | 2011-12-28 | I08P123001C0, I08S207807C0 | 20% | 57.6d | 2011-07-25 | 2011-10-19 | 78.53d | 0d | ELECTRICAL [397.2 h]; Cost [20466.7 AED] | 20,466.68 | 4,093.34 | I08P126001C0 | IC | C | 08 | P1 | ME | 260 | 01 | BILL 8 | B08 | S2 | 1F | R00 | ACF04 | 260 | 5 | 10 | 15 | 10 | 20 | 1S | MEP | M1F | 0 | 0 | 0 | 0 | 1187.84 |  |  |  |  |  |  |
| I08P126013C0 |  | IC-08 ; 1st Fix, Inst of Cable Tray (PAT RM-1) | 84d | 2011-07-10 A | 2011-11-05 | I08P123001C0, I08P127010C0 SS+10d, I08S207807C0 | 80% | 16.8d | 2011-08-22 | 2011-12-06 | 78.53d | 0d | ELECTRICAL [205.2 h]; Cost [11036 AED] | 11,035.96 | 8,828.76 | I08P126013C0 | IC | C | 08 | P1 | ME | 260 | 13 | BILL 8 | B08 | S2 | 1F | R00 | ACF04 | 260 | 20 | 30 | 30 | 20 |  | 1S | MEP | M1F | 0 | 0 | 0 | 0 |  |  |  |  |  |  |  |
| I08P127010C0 |  | IC-08 ; 1st Fix, Inst of Trunking for ELV system (PAT RM-1) | 66d | 2011-08-10 A | 2011-12-22 | I08P123001C0, I08P126001C0 SS+14d, I08S207807C0 | 20% | 52.8d | 2011-08-24 | 2011-11-15 | 78.53d | 0d | ELECTRICAL [914.4 h]; Cost [47960 AED] | 47,960.04 | 9,592.01 | I08P127010C0 | IC | C | 08 | P1 | ME | 270 | 10 | BILL 8 | B08 | S2 | 1F | R00 | ACF04 | 270 | 5 |  | 10 | 0 | 20 | 1S | MEP | M1F | 0 | 0 | 0 | 0 |  |  |  |  | zero |  |  |
| I08P122005C0 |  | IC-08 ; 1st Fix, Inst of Water supply pipe (ceiling) (PAT RM-1) | 54d | 2011-09-05 A | 2011-12-18 | I08P122019C0 SS+10d, I08P123001C0 | 10% | 48.6d | 2011-09-26 | 2011-12-04 | 78.53d | 0d | PLUMBING [1670.4 h]; Cost [90220.7 AED] | 90,220.67 | 9,022.07 | I08P122005C0 | IC | C | 08 | P1 | ME | 220 | 05 | BILL 8 | B08 | S2 | 1F | R00 | ACF04 | 220 |  |  |  |  |  | 1S | MEP | M1F |  |  |  |  |  |  |  |  |  |  |  |
| I08P123017C0 |  | IC-08 ; 1st Fix, Inst of CHW pipe (PAT RM-1) | 54d | 2011-09-05 A | 2012-01-30 | I08P121111C0 SS+12d, I08P123001C0, I08P105503C0 FF+18d | 40% | 32.4d | 2011-10-12 | 2011-12-20 | 29.93d | 0d | MECHANICAL [2832 h]; Cost [154640 AED] | 154,640.47 | 61,856.19 | I08P123017C0 | IC | C | 08 | P1 | ME | 230 | 17 | BILL 8 | B08 | S2 | 1F | R00 | ACF04 | 230 |  |  |  |  | 15 | 1S | MEP | M1F |  |  |  |  |  |  |  |  |  |  |  |
| I08P123023C0 |  | IC-08 ; 1st Fix, Inst of Main Ducting (PAT RM-1) | 66d | 2011-09-05 A | 2012-02-25 | I08P123001C0, I08P123017C0 SS+10d | 20% | 52.8d | 2011-10-24 | 2012-01-16 | 45.52d | 0d | MECHANICAL [7574.4 h]; Cost [413624 AED] | 413,624.26 | 82,724.85 | I08P123023C0 | IC | C | 08 | P1 | ME | 230 | 23 | BILL 8 | B08 | S2 | 1F | R00 | ACF04 | 230 |  |  |  |  | 20 | 1S | MEP | M1F |  |  |  |  |  |  |  |  |  |  |  |
| I08P122007C0 |  | IC-08 ; 1st Fix, Inst of Medical Gas pipe (PAT RM-1) | 48d | 2011-10-16 | 2011-12-17 | I08P121111C0 SS+14d, I08P123001C0 |  |  |  |  | 85.12d | 52.2d | PLUMBING [328.8 h]; Cost |  |  | I08P122007C0 | IC | C | 08 | P1 | ME | 220 | 07 | BILL 8 | B08 | S2 | 1F | R00 | ACF04 | 220 |  |  |  |  |  | 1S | MEP | M1F |  |  |  |  |  |  |  |  |  |  |  |
| I08P105503C0 |  | IC-08 ; Ceiling Support for medical equipment (PAT RM-1) | 15d | 2011-12-21 | 2012-01-09 | I08P109201C0, IAFCI22001R20 FS+72d |  |  |  |  | 29.93d | 0d | SECONDARY STEEL [245 h]; STRUCTURAL STEEL [17 T(Fe)]; Cost |  |  | D03EY05503C0 | IC | C | 08 | P1 | SW | 055 | 03 | BILL 8 | B08 | S2 | 03 | R00 | ACF03 | b |  |  |  |  |  |  |  |  |  |  |  |  |  | 335 | 962 |  |  |  |  |
| I08P108103C0 |  | IC-08 ; Door Frames (PAT RM-1) | 36d | 2011-12-21 | 2012-02-02 | I08P109201C0, GNHE08101C0 FS+69d |  |  |  |  | 80.92d | 48.3d | ASSORTED DOORS [254 h]; Cost |  |  | I08P108103C0 | IC | C | 08 | P1 | DO | 081 | 03 | BILL 8 | B08 | S2 | DF | R00 | ACF06 | 081 |  |  |  |  |  |  |  |  |  |  |  |  |  | 316 | 947 |  |  | 08 |  |
| I08P109203C0 |  | IC-08 ; Partitions 1st face (PAT RM-1) | 36d | 2011-12-21 | 2012-02-02 | I08P109201C0 |  |  |  |  | 38.92d | 6.3d | PARTITIONS [492 m]; PARTITIONS [3739 h]; Cost |  |  | I08P109203C0 | IC | C | 08 | P1 | PT | 092 | 03 | BILL 8 | B08 | S2 | 2F | R00 | ACF06 | 092 |  |  |  |  |  |  | GP | P1F |  |  |  |  |  | 314 | 945 |  |  |  |  |
| I08P122011C0 |  | IC-08 ; 2nd Fix, Drainage/Water pipe (wall) (PAT RM-1) | 42d | 2011-12-21 | 2012-02-11 | I08P109201C0 |  |  |  |  | 32.92d | 0d | PLUMBING [630 h]; Cost |  |  | I08P122011C0 | IC | C | 08 | P1 | ME | 220 | 11 | BILL 8 | B08 | S2 | 2F | R00 | ACF07 | 220 |  |  |  |  |  | 2n | MEP |  |  |  |  |  |  |  |  |  |  |  |  |
| I08P122015C0 |  | IC-08 ; 2nd Fix, Medical Gas pipe (PAT RM-1) | 42d | 2011-12-21 | 2012-02-11 | I08P109201C0, I08P122007C0 SS |  |  |  |  | 32.92d | 0d | PLUMBING [328.8 h]; Cost |  |  | I08P122015C0 | IC | C | 08 | P1 | ME | 220 | 15 | BILL 8 | B08 | S2 | 2F | R00 | ACF07 | 220 |  |  |  |  |  | 2n | MEP |  |  |  |  |  |  |  |  |  |  |  |  |
| I08P126009C0 |  | IC-08 ; 2nd Fix, Inst of Wall conduites (PAT RM-1) | 42d | 2011-12-21 | 2012-02-11 | I08P109201C0 |  |  |  |  | 32.92d | 0d | ELECTRICAL [397.2 h]; Cost |  |  | I08P126009C0 | IC | C | 08 | P1 | ME | 260 | 09 | BILL 8 | B08 | S2 | 2F | R00 | ACF07 | 260 |  |  |  |  |  | 2n | MEP |  |  |  |  |  |  |  |  |  |  |  |  |
| I08P127001C0 |  | IC-08 ; 1st Fix, Wiring/ Cabling work (PAT RM-1) | 48d | 2011-12-28 | 2012-02-25 | I08P126001C0, I08P126013C0, I08P127010C0 |  |  |  |  | 93.53d | 63.6d | ELECTRICAL [213.6 h]; Cost |  |  | I08P127001C0 | IC | C | 08 | P1 | ME | 270 | 01 | BILL 8 | B08 | S2 | 1F | R00 | ACF04 | 270 |  |  |  |  |  | 1S | MEP | M1F |  |  |  |  |  |  |  |  |  |  |  |
| I08P105511C0 |  | IC-08 ; Wall reinforcement for MEP/Medical (PAT RM-1) | 24d | 2012-01-14 | 2012-02-11 | I08P109201C0, IAFCI22001R02 FS+72d |  |  |  |  | 32.62d | 0d | SECONDARY STEEL [77 h]; Cost |  |  | I08P105511C0 | IC | C | 08 | P1 | SW | 055 | 11 | BILL 8 | B08 | S2 | 03 | R00 | ACF03 | b |  |  |  |  |  |  |  |  |  |  |  |  |  |  |  |  |  |  |  |
| I08P123009C0 |  | IC-08 ; 2nd Fix, Inst of VAV'S CHW connection (PAT RM-1) | 42d | 2012-01-30 | 2012-03-20 | I08P123017C0 |  |  |  |  | 29.93d | 0d | MECHANICAL [901.2 h]; Cost |  |  | I08P123009C0 | IC | C | 08 | P1 | ME | 230 | 09 | BILL 8 | B08 | S2 | 2F | R00 | ACF07 | 230 |  |  |  |  |  | 2n | MEP |  |  |  |  |  |  |  |  |  |  |  |  |
| I08P101005C0 |  | IC-08 ; 2nd, Wall Inspection by Consultant (PAT RM-1) | 0d | 2012-02-11 | 2012-02-11 | I08P122011C0, I08P122015C0, I08P126009C0 |  |  |  |  | 32.92d | 0.3d | Cost |  |  | I08P101005C0 | IC | C | 08 | P1 | ME | 010 | 05 | BILL 8 | B08 | S2 | WI | R00 | ACF07 | 010 |  |  |  |  |  | 2n | MEP |  |  |  |  |  |  |  |  |  |  |  |  |
| I08P109205C0 |  | IC-08 ; Partitions Closing (PAT RM-1) | 42d | 2012-02-12 | 2012-03-31 | I08P101005C0, I08P105511C0, I08P109203C0, I08P122005C0, I08P122019C0, IAFOA09210C1 FF, I08P108103C0 FF, IAFCI22001R20 FS+72d |  |  |  |  | 32.62d | 0d | PARTITIONS [492 m]; PARTITIONS [4792 h]; Cost |  |  | I08P109205C0 | IC | C | 08 | P1 | PT | 092 | 05 | BILL 8 | B08 | S2 | FF | R00 | ACF06 | 092 |  |  |  |  |  |  | GP | P2F |  |  |  |  |  | 315 | 946 | R3 |  |  |  |
| I08P123008C0 |  | IC-08 ; 1st Fix, Inst of VCD's/FD's (PAT RM-1) | 48d | 2012-02-25 | 2012-04-21 | I08P123023C0, I08P105503C0 FF+18d |  |  |  |  | 45.52d | 15.6d | MECHANICAL [910.8 h]; Cost |  |  | I08P123008C0 | IC | C | 08 | P1 | ME | 230 | 08 | BILL 8 | B08 | S2 | 1F | R00 | ACF04 | 230 |  |  |  |  |  | 1S | MEP | M1F |  |  |  |  |  |  |  |  |  |  |  |
| I08P123015C0 |  | IC-08 ; 2nd Fix, Insulation of CHW pipe & Duct (PAT RM-1) | 42d | 2012-03-20 | 2012-05-08 | I08P123009C0, I08P123017C0, I08P123023C0 |  |  |  |  | 29.93d | 0d | MECHANICAL [3075.6 h]; Cost |  |  | I08P123015C0 | IC | C | 08 | P1 | ME | 230 | 15 | BILL 8 | B08 | S2 | 2F | R00 | ACF07 | 230 |  |  |  |  |  | 2n | MEP |  |  |  |  |  |  |  |  |  |  |  |  |
| I08P107103C0 |  | IC-08 ; Waterproofing (PAT RM-1) | 12d | 2012-04-01 | 2012-04-14 | I08P108103C0, I08P109205C0 |  |  |  |  | 108.38d | 0d | THERMAL & MOISTURE [144 h]; THERMAL & MOISTURE [935 m2]; Cost |  |  | I08P107103C0 | IC | C | 08 | P1 | FF | 071 | 03 | BILL 8 | B08 | S2 | 01 | R00 | ACF03 | 071 |  |  |  |  |  |  |  |  |  |  |  |  |  | 105 | 999 |  |  |  |  |
| I08P109901C0 |  | IC-08 ; Wall Prime & 1st coat (PAT RM-1) | 30d | 2012-04-01 | 2012-05-05 | I08P109205C0, I08SE05509C0 |  |  |  |  | 32.62d | 0d | WALL PAINT [901 h]; WALL PAINT [1124 m2]; Cost |  |  | I08P109901C0 | IC | C | 08 | P1 | PA | 099 | 01 | BILL 8 | B08 | S2 | 01 | R00 | ACF06 | 099 |  |  |  |  |  |  |  |  |  |  |  |  |  | 328 | 956 |  |  |  |  |
| I08P126005C0 |  | IC-08 ; 2nd Fix, Wiring for Power/Lighting/Emergency (PAT RM-1) | 48d | 2012-04-01 | 2012-05-26 | I08P109205C0 |  |  |  |  | 99.12d | 0d | ELECTRICAL [213.6 h]; Cost |  |  | I08P126005C0 | IC | C | 08 | P1 | ME | 260 | 05 | BILL 8 | B08 | S2 | 2F | R00 | ACF07 | 260 |  |  |  |  |  | 2n | MEP |  |  |  |  |  |  |  |  |  |  |  |  |
| I08P126007C0 |  | IC-08 ; 2nd Fix, Cable Pulling (PAT RM-1) | 48d | 2012-04-01 | 2012-05-26 | I08P109201C0 SS+6d, I08P109205C0 |  |  |  |  | 135.12d | 105.2d | ELECTRICAL [2858.4 h]; Cost |  |  | I08P126007C0 | IC | C | 08 | P1 | ME | 260 | 07 | BILL 8 | B08 | S2 | 2F | R00 | ACF07 | 260 |  |  |  |  |  | 2n | MEP |  |  |  |  |  |  |  |  |  |  |  |  |
| I08P126053C0 |  | IC-08 ; 2nd Fix, Wiring / Cabling (PAT RM-1) | 48d | 2012-04-01 | 2012-05-26 | I08P109203C0, I08P109205C0 |  |  |  |  | 50.62d | 20.7d | ELECTRICAL [213.6 h]; Cost |  |  | I08P126053C0 | IC | C | 08 | P1 | ME | 260 | 53 | BILL 8 | B08 | S2 | 2F | R00 | ACF07 | 260 |  |  |  |  |  | 2n | MEP |  |  |  |  |  |  | 389 | 977 |  |  |  |  |
| I08P127020C0 |  | IC-08 ; 2nd Fix, Inst of ELV Equipment (Panels) (PAT RM-1) | 60d | 2012-04-01 | 2012-06-09 | I08P109205C0 |  |  |  |  | 87.12d | 44.7d | ELECTRICAL [1041.6 h]; Cost |  |  | I08P127020C0 | IC | C | 08 | P1 | ME | 270 | 20 | BILL 8 | B08 | S2 | 2F | R00 | ACF04 | 270 |  |  |  |  |  | 2n | MEP |  |  |  |  |  |  |  |  |  |  |  | E |
| I08P109305C0 |  | IC-08 ; Ceramic floor tile (PAT RM-1) | 20.75d | 2012-04-15 | 2012-05-08 | I08P107103C0 |  |  |  |  | 108.38d | 0d | CERAMIC FLOOR TILES [112 h]; CERAMIC FLOOR TILES [59 m2]; Cost |  |  | I08P109305C0 | IC | C | 08 | P1 | FF | 093 | 05 | BILL 8 | B08 | S2 | 02 | R00 | ACF06 | CT |  |  |  |  |  |  |  |  |  |  |  |  |  | 106 | 1000 |  |  |  |  |
| I08P126011C0 |  | IC-08 ; 2nd Fix, Inst of Equipment (DB) (PAT RM-1) | 66d | 2012-04-23 | 2012-07-09 | I08P109205C0, I07SL26011C0 SS+3d |  |  |  |  | 42.25d | 0d | ELECTRICAL [1736.4 h]; Cost |  |  | I08P126011C0 | IC | C | 08 | P1 | ME | 260 | 11 | BILL 8 | B08 | S2 | 2F | R00 | ACF04 | 260 |  |  |  |  |  | 2n | MEP |  |  |  |  |  |  |  |  |  |  |  | E |
| I08P105501C0 |  | IC-08 ; Handrails & balustrade (PAT RM-1) | 30.5d | 2012-05-06 | 2012-06-10 | I08P109901C0 |  |  |  |  | 74.12d | 44.2d | SECONDARY STEEL [346 h]; Cost |  |  | I08P105501C0 | IC | C | 08 | P1 | SW | 055 | 01 | BILL 8 | B08 | S2 | 01 | R00 | ACF03 | a |  |  |  |  |  |  |  |  |  |  |  |  |  |  |  |  |  |  |  |
| I08P109501C0 |  | IC-08 ; Ceiling Grid and Service Tile (PAT RM-1) | 36d | 2012-05-08 | 2012-06-20 | I08P105503C0, I08P109205C0, I08P121117C0, I08P123008C0, I08P123009C0, I08P123015C0, I08P127001C0, IAFCI22002R02 FS+72d, I08P126053C0 FF, I08P109901C0 |  |  |  |  | 29.93d | 0d | CEILING GRID FOR GYPSUM [1982.09 h]; CEILING GRID FOR GYPSUM [169.45 m2]; Cost |  |  | I08P109501C0 | IC | C | 08 | P1 | CE | 095 | 01 | BILL 8 | B08 | S2 | 01 | R00 | ACF06 | 095 |  |  |  |  |  |  |  |  |  |  |  |  |  | 323 | 952 |  |  |  |  |
| I08P109510C0 |  | IC-08 ; Patient Lift Ceiling Rail (by others) (PAT RM-1) | 0d | 2012-05-08 | 2012-05-08 | I08P109501C0 SS |  |  |  |  | 150.43d | 120.5d | Cost |  |  | I06P109501C0 | IC | C | 08 | P1 | CE | 095 | 10 | BILL 8 | B08 | S2 | 02 | R00 | ACF06 | 095 |  |  |  |  |  |  |  |  |  |  |  |  |  | 323 | 952 |  |  |  |  |
| I08P122025C0 |  | IC-08 ; Final Fix, Inst of Sanitary Ware (PAT RM-1) | 36d | 2012-05-08 | 2012-06-20 | I08P109205C0, I08P109305C0, A10230 FS+148d |  |  |  |  | 108.38d | 0d | PLUMBING [1315.2 h]; Cost |  |  | I08P122025C0 | IC | C | 08 | P1 | ME | 220 | 25 | BILL 8 | B08 | S2 | FF | R00 | ACF07 | 220 |  |  |  |  |  | FF | MEP |  |  |  |  |  |  |  |  |  |  |  |  |
| I08P126015C0 |  | IC-08 ; Final Fix, Termination & Gladding of Cables (PAT RM-1) | 36d | 2012-05-27 | 2012-07-08 | I08P126005C0 |  |  |  |  | 99.12d | 69.2d | ELECTRICAL [158.4 h]; Cost |  |  | I08P126015C0 | IC | C | 08 | P1 | ME | 260 | 15 | BILL 8 | B08 | S2 | FF | R00 | ACF07 | 260 |  |  |  |  |  | FF | MEP |  |  |  |  |  |  |  |  |  |  |  |  |
| I08P109202C0 |  | IC-08 ; Rolling Shade (PAT RM-1) | 30d | 2012-06-20 | 2012-07-25 | I08P109501C0 |  |  |  |  | 126.42d | 96.5d | PARTITIONS [839 h]; Cost |  |  | I06P109201C0 | IC | C | 08 | P1 | FI | 092 | 02 | BILL 8 | B08 | S2 | 02 | R00 | ACF06 | 092 |  |  |  |  |  |  | GP |  |  |  |  |  |  | 313 | 944 |  |  |  |  |
| I08P109601C0 |  | IC-08 ; Flooring (Rubber,Terrazzo) (PAT RM-1) | 36d | 2012-06-20 | 2012-08-01 | I08P109501C0, I08P105501C0 FF |  |  |  |  | 29.93d | 0d | TERRAZO FLOOR [856 h]; TERRAZO FLOOR [474 m2]; RUBBER FLOOR [288 m2]; RUBBER FLOOR [120 h]; Cost |  |  | I08P109601C0 | IC | C | 08 | P1 | FF | 096 | 01 | BILL 8 | B08 | S2 | 01 | R00 | ACF06 | RF |  |  |  |  |  |  |  |  |  |  |  |  |  | 326 | 955 |  |  |  |  |
| I08P109903C0 |  | IC-08 ; Wall Final Paint (PAT RM-1) | 30d | 2012-06-20 | 2012-07-25 | I08P109901C0, I08P109905C0, I08P109501C0 |  |  |  |  | 126.42d | 72d | WALL PAINT [486 h]; WALL PAINT [605 m2]; Cost |  |  | I08P109903C0 | IC | C | 08 | P1 | PA | 099 | 03 | BILL 8 | B08 | S2 | 02 | R00 | ACF06 | 099 |  |  |  |  |  |  |  |  |  |  |  |  |  | 329 | 957 |  |  |  |  |
| I08P109905C0 |  | IC-08 ; Ceiling Prime & 1st coat (PAT RM-1) | 0d | 2012-06-20 | 2012-06-20 | I08P109501C0 |  |  |  |  | 126.42d | 0d | Cost |  |  | I08P109905C0 | IC | C | 08 | P1 | PA | 099 | 05 | BILL 8 | B08 | S2 | 01 | R00 | ACF06 | 099 |  |  |  |  |  |  |  |  |  |  |  |  |  | 330 | 958 |  |  |  |  |
| I08P121115C0 |  | IC-08 ; 2nd Fix, Inst of Sprinkler droppers (PAT RM-1) | 48d | 2012-06-20 | 2012-08-15 | I08P109501C0 |  |  |  |  | 66.42d | 0d | MECHANICAL [800.4 h]; Cost |  |  | I08P121115C0 | IC | C | 08 | P1 | ME | 211 | 15 | BILL 8 | B08 | S2 | 2F | R00 | ACF07 | 211 |  |  |  |  |  | 2n | MEP |  |  |  |  |  |  |  |  |  |  |  |  |
| I08P123021C0 |  | IC-08 ; 2nd Fix, Inst of Flexible Duct & Plenum boxes (PAT RM-1) | 48d | 2012-06-20 | 2012-08-15 | I08P109205C0, I08P109501C0 |  |  |  |  | 66.42d | 0d | MECHANICAL [72 h]; Cost |  |  | I08P123021C0 | IC | C | 08 | P1 | ME | 230 | 21 | BILL 8 | B08 | S2 | 2F | R00 | ACF07 | 230 |  |  |  |  |  | 2n | MEP |  |  |  |  |  |  |  |  |  |  |  |  |
| I08P126017C0 |  | IC-08 ; Final Fix, Inst of Ceiling rose (PAT RM-1) | 36d | 2012-06-20 | 2012-08-01 | I08P109501C0 |  |  |  |  | 54.42d | 0d | ELECTRICAL [33.6 h]; Cost |  |  | I08P126017C0 | IC | C | 08 | P1 | ME | 260 | 17 | BILL 8 | B08 | S2 | FF | R00 | ACF07 | 260 |  |  |  |  |  | FF | MEP |  |  |  |  |  |  |  |  |  |  |  |  |
| I08P127002C0 |  | IC-08 ; 2nd Fix, Wiring Droppers (PAT RM-1) | 48d | 2012-06-20 | 2012-08-15 | I08P109501C0 |  |  |  |  | 60.42d | 0d | ELECTRICAL [213.6 h]; Cost |  |  | I08P127002C0 | IC | C | 08 | P1 | ME | 270 | 02 | BILL 8 | B08 | S2 | 2F | R00 | ACF07 | 270 |  |  |  |  |  | 2n | MEP |  |  |  |  |  |  |  |  |  |  |  |  |
| I08P122021C0 |  | IC-08 ; Final Fix, Terminate Sanitary Ware & Appliances (PAT RM-1) | 36d | 2012-06-20 | 2012-08-01 | I08P122011C0, I08P122025C0 |  |  |  |  | 108.38d | 78.45d | PLUMBING [1315.2 h]; Cost |  |  | I08P122021C0 | IC | C | 08 | P1 | ME | 220 | 21 | BILL 8 | B08 | S2 | FF | R00 | ACF07 | 220 |  |  |  |  |  | FF | MEP |  |  |  |  |  |  |  |  |  |  |  |  |
| I08P121113C0 |  | IC-08 ; Final Fix, Inst of Sprinklers head/ Extinguisher (PAT RM-1) | 36d | 2012-06-27 | 2012-08-08 | I08P109501C0, I08P121115C0 SS+6d |  |  |  |  | 72.42d | 42.5d | MECHANICAL [152.4 h]; Cost |  |  | I08P121113C0 | IC | C | 08 | P1 | ME | 211 | 13 | BILL 8 | B08 | S2 | FF | R00 | ACF07 | 211 |  |  |  |  |  | FF | MEP |  |  |  |  |  |  |  |  |  |  |  |  |
| I08P123019C0 |  | IC-08 ; Final Fix, Inst of Grilles & Diffusers (PAT RM-1) | 36d | 2012-06-27 | 2012-08-08 | I08P109501C0, I08P123021C0 SS+6d |  |  |  |  | 72.42d | 42.5d | MECHANICAL [757.2 h]; Cost |  |  | I08P123019C0 | IC | C | 08 | P1 | ME | 230 | 19 | BILL 8 | B08 | S2 | FF | R00 | ACF07 | 230 |  |  |  |  |  | FF | MEP |  |  |  |  |  |  |  |  |  |  |  |  |
| I08P126003C0 |  | IC-08 ; Final Fix, Inst of Light fittings (PAT RM-1) | 54d | 2012-06-27 | 2012-09-01 | I08P109501C0, I08P126017C0 SS+6d |  |  |  |  | 54.42d | 24.5d | ELECTRICAL [9577.2 h]; Cost |  |  | I08P126003C0 | IC | C | 08 | P1 | ME | 260 | 03 | BILL 8 | B08 | S2 | FF | R00 | ACF07 | 260 |  |  |  |  |  | FF | MEP |  |  |  |  |  |  |  |  |  |  |  |  |
| I08P127030C0 |  | IC-08 ; Final Fix, Inst of ELV device (Detector/Speaker) (PAT RM-1) | 48d | 2012-06-27 | 2012-08-25 | I08P109501C0, I08P127002C0 SS+6d |  |  |  |  | 60.42d | 30.5d | ELECTRICAL [1707.6 h]; Cost |  |  | I08P127030C0 | IC | C | 08 | P1 | ME | 270 | 30 | BILL 8 | B08 | S2 | FF | R00 | ACF07 | 270 |  |  |  |  |  | FF | MEP |  |  |  |  |  |  |  |  |  |  |  |  |
| I08P106101C0 |  | IC-08 ; Wood / caseworks (PAT RM-1) | 48d | 2012-08-01 | 2012-09-29 | I08CO04405C0, I08P109501C0, I08P109601C0, I08P109901C0, IAFWA00103M0, IAFCI22002R02 FS+190d |  |  |  |  | 29.93d | 0d | WOOD WORK/CASEWORK [282.36 no]; WOOD WORK/CASEWORK [2265 h]; Cost |  |  | I08P106101C0 | IC | C | 08 | P1 | WO | 061 | 01 | BILL 8 | B08 | S2 | WW | R00 | ACF06 | 061 |  |  |  |  |  |  |  |  |  |  |  |  |  | 332 | 960 |  |  |  |  |
| I08P106102C0 |  | IC-08 ; Head/Foot Wall (PAT RM-1) | 30.5d | 2012-08-01 | 2012-09-09 | I08P109501C0, IAFWA00103M0, I08P106101C0 SS |  |  |  |  | 29.93d | 0d | WOOD WORK/CASEWORK [1479 h]; Cost |  |  | I08P106102C0 | IC | C | 08 | P1 | WO | 061 | 02 | BILL 8 | B08 | S2 | WW | R00 | ACF06 | 061 |  |  |  |  |  |  |  |  |  |  |  |  |  | 332 | 960 |  |  |  |  |
| I08P108107C0 |  | IC-08 ; Doors (PAT RM-1) | 36d | 2012-08-01 | 2012-09-15 | I08P108103C0, I08P109501C0, I08P109601C0, I08P109901C0 |  |  |  |  | 60.42d | 0d | ASSORTED DOORS [800 h]; ASSORTED DOORS [80 no]; Cost |  |  | I08P108107C0 | IC | C | 08 | P1 | DO | 081 | 07 | BILL 8 | B08 | S2 | DR | R00 | ACF06 | 081 |  |  |  |  |  |  |  |  |  |  |  |  |  | 317 | 948 |  |  | 08 |  |
| I08P109701C0 |  | IC-08 ; Wall finishes (ST, WD, WC) (PAT RM-1) | 36d | 2012-08-01 | 2012-09-15 | I08P126011C0, I08P127020C0, IAFCI22002R02 FS+170d, I08P109601C0 |  |  |  |  | 42.42d | 0d | ASSORTED WALL FINISH [477 h]; ASSORTED WALL FINISH [548 m2]; Cost |  |  | I08P109701C0 | IC | C | 08 | P1 | WF | 097 | 01 | BILL 8 | B08 | S2 | 01 | R00 | ACF06 | 097 |  |  |  |  |  |  |  |  |  |  |  |  |  | 105 | 1002 |  |  |  |  |
| I08P122029C0 |  | IC-08 ; Final Fix, Medical Gas pipe (PAT RM-1) | 18d | 2012-09-09 | 2012-09-30 | I08P109501C0, I08P106102C0 |  |  |  |  | 29.93d | 0d | PLUMBING [328.8 h]; Cost |  |  | I08P122029C0 | IC | C | 08 | P1 | ME | 220 | 29 | BILL 8 | B08 | S2 | FF | R00 | ACF07 | 220 |  |  |  |  |  | FF | MEP |  |  |  |  |  |  |  |  |  |  |  |  |
| I08P108709C0 |  | IC-08 ; Ironmongery (PAT RM-1) | 24d | 2012-09-15 | 2012-10-13 | I08P108107C0, IZ9GZ08155R2 FF |  |  |  |  | 60.42d | 30.5d | IRONMONGERY [370 h]; IRONMONGERY [37 no]; Cost |  |  | I08P108709C0 | IC | C | 08 | P1 | DO | 087 | 09 | BILL 8 | B08 | S2 | IM | R00 | ACF06 | 087 |  |  |  |  |  |  |  |  |  |  |  |  |  | 322 | 951 |  |  | 08 |  |
| I08P111001C0 |  | IC-08 ; Wall Protection (WP, CG, WG, FCG) (PAT RM-1) | 24d | 2012-09-15 | 2012-10-13 | I08P109701C0, I08P109903C0 SS |  |  |  |  | 60.42d | 30.5d | FF&E [58 h]; Cost |  |  | I08P111001C0 | IC | C | 08 | P1 | WF | 110 | 01 | BILL 8 | B08 | S2 | 03 | R00 | ACF08 | b |  |  |  |  |  |  |  |  |  |  |  |  |  | 326 | 1001 |  |  |  |  |
| I08P101006C0 |  | IC-08 ; 2nd, Ceiling Inspection by Consultants (PAT RM-1) | 0d | 2012-09-30 | 2012-09-30 | I08P121115C0, I08P123009C0, I08P123015C0, I08P127002C0, I08P109501C0, I08P121113C0, I08P122029C0, I08P123019C0, I08P126003C0, I08P126017C0, I08P127030C0, I08P126015C0 |  |  |  |  | 29.93d | 0d | Cost |  |  | I08P101006C0 | IC | C | 08 | P1 | ME | 010 | 06 | BILL 8 | B08 | S2 | CI | R00 | ACF07 | 010 |  |  |  |  |  | 2n | MEP |  |  |  |  |  |  |  |  |  |  |  |  |
| I08P109503C0 |  | IC-08 ; Ceiling closure - ACT/Gypsum (PAT RM-1) | 18d | 2012-09-30 | 2012-10-21 | I08P101006C0, I08P109510C0, I08P121115C0, I08P126005C0, I08P127001C0, I08P127002C0, IAFOA09509C1 FF, I08P106101C0, I08P109701C0, I08P123021C0, I08P126007C0 |  |  |  |  | 29.93d | 0d | ASSORTED CEILING FINISH [407.13 h]; CEILING GYPSUM [55.55 h]; ASSORTED CEILING FINISH [662 m2]; CEILING GYPSUM [169 m2]; Cost |  |  | I08P109503C0 | IC | C | 08 | P1 | CE | 095 | 03 | BILL 8 | B08 | S2 | 02 | R00 | ACF06 | 095 |  |  |  |  |  |  |  |  |  |  |  |  |  | 324 | 953 |  |  |  |  |
| I08P109677C1 |  | IC-08, Carpet Tile Finish (Patient Room-1) | 0d | 2012-10-21 | 2012-10-21 | I08P109903C0 SS, I08P109907C0 SS |  |  |  |  | 53.8d | 32.8d | Cost |  |  |  | IC | C | 08 | P1 | FF | 096 |  |  | B08 |  |  | R00 | ACF06 | CPT |  |  |  |  |  |  | CPT |  |  |  |  |  |  |  |  |  |  |  |  |
| I08P109907C0 |  | IC-08 ; Ceiling Final paint (PAT RM-1) | 0d | 2012-10-21 | 2012-10-21 | I08P109601C0, I08P109905C0, I08P109503C0 |  |  |  |  | 53.8d | 0d | Cost |  |  | I08P109907C0 | IC | C | 08 | P1 | PA | 099 | 07 | BILL 8 | B08 | S2 | 02 | R00 | ACF06 | 099 |  |  |  |  |  |  |  |  |  |  |  |  |  | 331 | 959 |  |  |  |  |
| I08P111003C0 |  | IC-08 ; FF & E (PAT RM-1) | 12d | 2012-10-21 | 2012-11-06 | I08P109601C0, I08P106101C0, I08P109503C0 |  |  |  |  | 41.92d | 12d | FF&E [587 h]; FF&E [312.94 no]; Cost |  |  | I08P111003C0 | IC | C | 08 | P1 | WO | 110 | 03 | BILL 8 | B08 | S2 | 04 | R00 | ACF08 | a |  |  |  |  |  |  |  |  |  |  |  |  |  | 333 | 961 |  |  |  |  |
| I08P122027C0 |  | IC-08 ; Final Fix, Inst of All drain (PAT RM-1) | 12d | 2012-10-21 | 2012-11-06 | I08P109305C0, I08P109503C0, IZ9GZ22060R2 FF |  |  |  |  | 29.93d | 0d | PLUMBING [630 h]; Cost |  |  | I08P122027C0 | IC | C | 08 | P1 | ME | 220 | 27 | BILL 8 | B08 | S2 | FF | R00 | ACF07 | 220 |  |  |  |  |  | FF | MEP |  |  |  |  |  |  |  |  |  |  |  |  |
| I08P126019C0 |  | IC-08 ; Final Fix, Inst of Switch/Sockets (PAT RM-1) | 12d | 2012-10-21 | 2012-11-06 | I08P109901C0, I08P109503C0, IZ9GZ27062R2 FF, IV09GZ27065R2 FF |  |  |  |  | 29.93d | 0d | ELECTRICAL [144 h]; Cost |  |  | I08P126019C0 | IC | C | 08 | P1 | ME | 260 | 19 | BILL 8 | B08 | S2 | FF | R00 | ACF07 | 260 |  |  |  |  |  | FF | MEP |  |  |  |  |  |  |  |  |  |  |  |  |

| ID | WBS | Activity | Duration | Start | Finish | Predecessors | Complete | Remaining | Planned start | Planned finish | Total float | Free float | Resources | Cost | Actual cost | change id | CCAD BUILDING(SET) | CCAD PHASE(SET) | CCAD FLOOR(SET) | CCAD ZONE(SET) | CCAD WORK(SET) | CCAD SECTION(SET) | CCAD SERIAL No.(SET) | CCAD CBS(SET) | CCAD BILL(SET) | CCAD HANDOVER(SET) | CCAD TAG(SET) | CCAD REV(SET) | CCADACF (SET) | CCAD SSCF | July2011 Target% Complete | Claimed This Month | N_% | P_811 | P_711 | U% | CCAD SUB ZONE MEP(SET) | CCAD CSA | Act Selector % | user_number8 | user_integer1 | user_integer2 | user_number7 | Change Order # | NEW ACTIVITY ID | R3 Partitions | FILTER | CCAD DIVISION(SET) | CCAD MEQ |
| --- | --- | --- | --- | --- | --- | --- | --- | --- | --- | --- | --- | --- | --- | --- | --- | --- | --- | --- | --- | --- | --- | --- | --- | --- | --- | --- | --- | --- | --- | --- | --- | --- | --- | --- | --- | --- | --- | --- | --- | --- | --- | --- | --- | --- | --- | --- | --- | --- | --- |
|  | 10 | **Precommissioning Tesing & snagging (PAT RM-1)** |  | 2012-11-06 | 2012-12-13 |  |  |  |  |  |  |  |  |  |  |  |  |  |  |  |  |  |  |  |  |  |  |  |  |  |  |  |  |  |  |  |  |  |  |  |  |  |  |  |  |  |  |  |  |
| I08TS01804C0 |  | IC-08 ; MEP de-snag, FIREM sign-off | 12d | 2012-11-06 | 2012-11-21 | I08P122025C0, I08P122027C0, I08P126015C0, I08P121113C0, I08P123019C0, I08P122021C0, I08P122029C0, I08P126017C0, I08P126003C0, I08P127030C0, I08P126019C0 |  |  |  |  | 29.93d | 0d | TESTING & COMMISSIONING [510 h]; Cost |  |  | I08TS01801C0 | IC | C | 08 | TS | SC | 018 | 01 | BILL 8 | B08 | S2 | 01 | R00 | ACF07 | 018 |  |  |  |  |  |  |  |  |  |  |  |  |  |  |  |  |  |  |  |
| I08TS01808C0 |  | IC-08 ; Touch-up & Clean / JV inspection /CIR /De-snag | 17.88d | 2012-11-21 | 2012-12-13 | I08CO04402C0, I08CO04403C0, I08CO04405C0, I08CO04406C0, I08P105501C0, I08P105511C0, I08P106101C0, I08P106102C0, I08P107103C0, I08P108103C0, I08P108107C0, I08P108709C0, I08P109201C0, I08P109202C0, I08P109203C0, I08P109205C0, I08P109305C0, I08P109501C0, I08P109503C0, I08P109510C0, I08P109601C0, I08P109701C0, I08P109901C0, I08P109903C0, I08P109905C0, I08P109907C0, I08P111001C0, I08P111003C0, I08P121113C0, I08P122021C0, I08P122025C0, I08P122027C0, I08P122029C0, I08P123019C0, I08P126003C0, I08P126015C0, I08P126017C0, I08P126019C0, I08P127030C0, I08TS01804C0 |  |  |  |  | 29.93d | 0d | TESTING & COMMISSIONING [128 h]; Cost |  |  | I08TS01802C0 | IC | C | 08 | TS | SC | 018 | 02 | BILL 8 | B08 | S2 | 02 | R00 | ACF07 | 018 |  |  |  |  |  |  |  |  |  |  |  |  |  |  |  |  |  |  |  |
| I08TS01812C0 |  | IC-08 ; Consultant's final de-snag inspection | 0d | 2012-12-13 | 2012-12-13 | I08TS01808C0 |  |  |  |  | 29.93d | 8.93d | Cost |  |  | I08TS01803C0 | IC | C | 08 | TS | SC | 018 | 03 | BILL 8 | B08 | S2 | 03 | R00 | ACF07 | 018 |  |  |  |  |  |  |  |  |  |  |  |  |  |  |  |  |  |  |  |
|  | 04 | **PAT RM-2** |  | 2011-06-05 | 2012-12-09 |  |  |  |  |  |  |  |  |  |  |  |  |  |  |  |  |  |  |  |  |  |  |  |  |  |  |  |  |  |  |  |  |  |  |  |  |  |  |  |  |  |  |  |  |
| I08P223001C0 |  | IC-08 ; 1st Fix, Inst. of Supports for MEP (PAT RM-2) | 90d | 2011-06-05 A | 2011-10-16 | I08S207807C0 | 85% | 13.5d | 2011-06-05 | 2011-09-21 | 63.05d | 0d | MECHANICAL [577.2 h]; Cost [32540.2 AED] | 32,540.18 | 27,659.15 | I08P223001C0 | IC | C | 08 | P2 | ME | 230 | 01 | BILL 8 | B08 | S2 | 1F | R00 | ACF04 | 230 | 30 | 11323.98 | 30 | 80 | 30 | 85 | 1S | MEP | M1F |  |  |  |  |  |  |  |  |  |  |
| I08P222019C0 |  | IC-08 ; 1st Fix, Inst of Drainage pipe (ceiling) (PAT RM-2) | 84d | 2011-06-26 A | 2011-12-10 | BLZHC01568C0, I08P223001C0, I08P226013C0 SS+14d | 50% | 42d | 2011-08-17 | 2011-11-30 | 83.45d | 0d | PLUMBING [630 h]; Cost [34080.3 AED] | 34,080.3 | 17,040.15 | I08P222019C0 | IC | C | 08 | P2 | ME | 220 | 19 | BILL 8 | B08 | S2 | 1F | R00 | ACF04 | 220 | 20 | 7901.45 | 35 | 30 | 20 | 50 | 1S | MEP | M1F | 0 | 0 | 0 | 0 |  |  |  |  |  |  |
| I08P209201C0 |  | IC-08 ; Metal Studs (PAT RM-2) | 42d | 2011-06-27 A | 2011-12-21 | I08P223001C0 SS, I08PA09201C0 FF, IAFCI09201R02 FS+72d, I08CO04405C0 FF, I08CO04406C0 FF | 15% | 35.7d | 2011-07-11 | 2011-08-29 | 33.05d | 0d | PARTITIONS [3060 h]; PARTITIONS - Metal Studs [314 m]; Cost |  |  | I08P209201C0 | IC | C | 08 | P2 | PT | 092 | 01 | BILL 8 | B08 | S2 | 1F | R00 | ACF06 | 092 |  | 15890.34 |  | 15 | 10 |  |  | GP | PMS |  |  |  |  | 313 | 944 | R3 |  |  |  |
| I08P221111C0 |  | IC-08 ; 1st Fix, Inst of Sprinkler main pipe (PAT RM-2) | 84d | 2011-06-27 A | 2011-10-31 | BLZHC01568C0, I08P222005C0 SS+14d, I08P223001C0 | 85% | 12.6d | 2011-09-17 | 2011-12-29 | 83.45d | 0d | MECHANICAL [264 h]; Cost [14398.4 AED] | 14,398.38 | 12,238.62 | I08P221111C0 | IC | C | 08 | P2 | ME | 211 | 11 | BILL 8 | B08 | S2 | 1F | R00 | ACF04 | 211 | 30 | 1671.29 | 25 | 30 | 25 | 85 | 1S | MEP | M1F | 0 | 0 | 0 | 0 |  |  |  |  |  |  |
| I08P221117C0 |  | IC-08 ; 1st Fix, Inst of Sprinkler branch pipe (PAT RM-2) | 84d | 2011-07-10 A | 2012-01-30 | I08P209201C0, I08P221111C0, I08P205503C0 FF+18d | 85% | 12.6d | 2011-11-20 | 2012-03-01 | 120.05d | 87d | MECHANICAL [609.6 h]; Cost [33303.7 AED] | 33,303.68 | 28,308.12 | I08P221117C0 | IC | C | 08 | P2 | ME | 211 | 17 | BILL 8 | B08 | S2 | 1F | R00 | ACF04 | 211 |  |  | 20 | 30 | 20 | 85 | 1S | MEP | M1F | 0 | 0 | 0 | 0 |  |  |  |  |  |  |
| I08P226013C0 |  | IC-08 ; 1st Fix, Inst of Cable Tray (PAT RM-2) | 84d | 2011-07-10 A | 2011-11-05 | I08P223001C0, I08P227010C0 SS+10d, I08S207807C0 | 80% | 16.8d | 2011-08-23 | 2011-12-07 | 83.45d | 0d | ELECTRICAL [205.2 h]; Cost [11036 AED] | 11,035.96 | 8,828.76 | I08P226013C0 | IC | C | 08 | P2 | ME | 260 | 13 | BILL 8 | B08 | S2 | 1F | R00 | ACF04 | 260 | 20 |  | 30 | 30 | 20 |  | 1S | MEP | M1F | 0 | 0 | 0 | 0 |  |  |  |  |  |  |
| I08P227010C0 |  | IC-08 ; 1st Fix, Inst of Trunking for ELV system (PAT RM-2) | 66d | 2011-08-10 A | 2011-12-22 | I08P223001C0, I08P226001C0 SS+14d, I08S207807C0 | 20% | 52.8d | 2011-09-12 | 2011-12-04 | 83.45d | 0d | ELECTRICAL [914.4 h]; Cost [47960 AED] | 47,960.04 | 9,592.01 | I08P227010C0 | IC | C | 08 | P2 | ME | 270 | 10 | BILL 8 | B08 | S2 | 1F | R00 | ACF04 | 270 |  |  |  | 10 | 0 | 20 | 1S | MEP | M1F | 0 | 0 | 0 | 0 |  |  |  |  |  |  |
| I08P222005C0 |  | IC-08 ; 1st Fix, Inst of Water supply pipe (ceiling) (PAT RM-2) | 54d | 2011-09-05 A | 2011-12-18 | BLZHC01568C0, I08P222019C0 SS+10d, I08P223001C0 | 10% | 48.6d | 2011-10-12 | 2011-12-20 | 83.45d | 0d | PLUMBING [1670.4 h]; Cost [90220.7 AED] | 90,220.67 | 9,022.07 | I08P222005C0 | IC | C | 08 | P2 | ME | 220 | 05 | BILL 8 | B08 | S2 | 1F | R00 | ACF04 | 220 |  |  |  |  |  |  | 1S | MEP | M1F |  |  |  |  |  |  |  |  |  |  |
| I08P223017C0 |  | IC-08 ; 1st Fix, Inst of CHW pipe (PAT RM-2) | 54d | 2011-09-05 A | 2012-01-30 | BLZHC01568C0, I08P221111C0 SS+12d, I08P223001C0, I08P205503C0 FF+18d | 30% | 37.8d | 2011-10-29 | 2012-01-07 | 36.05d | 0d | MECHANICAL [2832 h]; Cost [154640 AED] | 154,640.47 | 46,392.14 | I08P223017C0 | IC | C | 08 | P2 | ME | 230 | 17 | BILL 8 | B08 | S2 | 1F | R00 | ACF04 | 230 |  |  |  |  |  | 30 | 1S | MEP | M1F |  |  |  |  |  |  |  |  |  |  |
| I08P223023C0 |  | IC-08 ; 1st Fix, Inst of Main Ducting (PAT RM-2) | 66d | 2011-09-05 A | 2012-02-18 | BLZHC01568C0, I08P223001C0, I08P223017C0 SS+7d | 20% | 52.8d | 2011-11-09 | 2012-01-29 | 57.05d | 0d | MECHANICAL [7574.4 h]; Cost [413624 AED] | 413,624.26 | 82,724.85 | I08P223023C0 | IC | C | 08 | P2 | ME | 230 | 23 | BILL 8 | B08 | S2 | 1F | R00 | ACF04 | 230 |  |  |  |  |  | 20 | 1S | MEP | M1F |  |  |  |  |  |  |  |  |  |  |
| I08P226001C0 |  | IC-08 ; 1st Fix, Inst of Trunking/Conduiting (PAT RM-2) | 48d | 2011-09-05 A | 2011-12-05 | I08P223001C0, I08S207807C0 | 20% | 38.4d | 2011-09-26 | 2011-11-24 | 83.45d | 0d | ELECTRICAL [397.2 h]; Cost [20466.7 AED] | 20,466.68 | 4,093.34 | I08P226001C0 | IC | C | 08 | P2 | ME | 260 | 01 | BILL 8 | B08 | S2 | 1F | R00 | ACF04 | 260 | 5 | 1187.84 |  |  |  | 20 | 1S | MEP | M1F |  |  |  |  |  |  |  | zero |  |  |
| I08P222007C0 |  | IC-08 ; 1st Fix, Inst of Medical Gas pipe (PAT RM-2) | 48d | 2011-10-16 | 2011-12-17 | BLZHC01568C0, I08P221111C0 SS+14d, I08P223001C0 |  |  |  |  | 85.25d | 52.2d | PLUMBING [328.8 h]; Cost |  |  | I08P222007C0 | IC | C | 08 | P2 | ME | 220 | 07 | BILL 8 | B08 | S2 | 1F | R00 | ACF04 | 220 |  |  |  |  |  |  | 1S | MEP | M1F |  |  |  |  |  |  |  |  |  |  |
| I08P205503C0 |  | IC-08 ; Ceiling Support for medical equipment (PAT RM-2) | 15d | 2011-12-21 | 2012-01-09 | I08P209201C0, IAFCI22001R20 FS+72d |  |  |  |  | 36.05d | 0d | SECONDARY STEEL [163 h]; STRUCTURAL STEEL [17 T(Fe)]; Cost |  |  | D03EY05503C0 | IC | C | 08 | P2 | SW | 055 | 03 | BILL 8 | B08 | S2 | 03 | R00 | ACF03 | b |  |  |  |  |  |  |  |  |  |  |  |  |  | 335 | 962 |  |  |  |  |
| I08P208103C0 |  | IC-08 ; Door Frames (PAT RM-2) | 36d | 2011-12-21 | 2012-02-02 | I08P209201C0, GNHE08101C0 FS+69d |  |  |  |  | 87.05d | 54d | ASSORTED DOORS [162 h]; Cost |  |  | I08P208103C0 | IC | C | 08 | P2 | DO | 081 | 03 | BILL 8 | B08 | S2 | DF | R00 | ACF06 | 081 |  |  |  |  |  |  |  |  |  |  |  |  |  | 316 | 947 |  |  | 08 |  |
| I08P209203C0 |  | IC-08 ; Partitions 1st face (PAT RM-2) | 36d | 2011-12-21 | 2012-02-02 | I08P209201C0 |  |  |  |  | 45.05d | 12d | PARTITIONS [314 m]; PARTITIONS [2402 h]; Cost |  |  | I08P209203C0 | IC | C | 08 | P2 | PT | 092 | 03 | BILL 8 | B08 | S2 | 2F | R00 | ACF06 | 092 |  |  |  |  |  | 0 |  | GP | P1F |  |  |  |  | 314 | 945 |  |  |  |  |
| I08P222011C0 |  | IC-08 ; 2nd Fix, Drainage/Water pipe (wall) (PAT RM-2) | 36d | 2011-12-21 | 2012-02-02 | I08P209201C0 |  |  |  |  | 45.05d | 12d | PLUMBING [630 h]; Cost |  |  | I08P222011C0 | IC | C | 08 | P2 | ME | 220 | 11 | BILL 8 | B08 | S2 | 2F | R00 | ACF07 | 220 |  |  |  |  |  |  | 2n | MEP |  |  |  |  |  |  |  |  |  |  |  |
| I08P222015C0 |  | IC-08 ; 2nd Fix, Medical Gas pipe (PAT RM-2) | 48d | 2011-12-21 | 2012-02-18 | I08P209201C0, I08P222007C0 SS |  |  |  |  | 33.05d | 0d | PLUMBING [328.8 h]; Cost |  |  | I08P222015C0 | IC | C | 08 | P2 | ME | 220 | 15 | BILL 8 | B08 | S2 | 2F | R00 | ACF07 | 220 |  |  |  |  |  |  | 2n | MEP |  |  |  |  |  |  |  |  |  |  |  |
| I08P226009C0 |  | IC-08 ; 2nd Fix, Inst of Wall conduites (PAT RM-2) | 48d | 2011-12-21 | 2012-02-18 | I08P209201C0 |  |  |  |  | 33.05d | 0d | ELECTRICAL [397.2 h]; Cost |  |  | I08P226009C0 | IC | C | 08 | P2 | ME | 260 | 09 | BILL 8 | B08 | S2 | 2F | R00 | ACF07 | 260 |  |  |  |  |  |  | 2n | MEP |  |  |  |  |  |  |  |  |  |  |  |
| I08P227001C0 |  | IC-08 ; 1st Fix, Wiring/ Cabling work (PAT RM-2) | 48d | 2011-12-22 | 2012-02-19 | I08P226001C0, I08P226013C0, I08P227010C0 |  |  |  |  | 104.45d | 71.4d | ELECTRICAL [213.6 h]; Cost |  |  | I08P227001C0 | IC | C | 08 | P2 | ME | 270 | 01 | BILL 8 | B08 | S2 | 1F | R00 | ACF04 | 270 |  |  |  |  |  |  | 1S | MEP | M1F |  |  |  |  |  |  |  |  |  |  |
| I08P205511C0 |  | IC-08 ; Wall reinforcement for MEP/Medical (PAT RM-2) | 24d | 2012-01-14 | 2012-02-11 | I08P209201C0, IAFCI22001R02 FS+72d |  |  |  |  | 38.75d | 5.7d | SECONDARY STEEL [50 h]; Cost |  |  | I08P205511C0 | IC | C | 08 | P2 | SW | 055 | 11 | BILL 8 | B08 | S2 | 03 | R00 | ACF03 | b |  |  |  |  |  |  |  |  |  |  |  |  |  |  |  |  |  |  |  |
| I08P223009C0 |  | IC-08 ; 2nd Fix, Inst of VAV'S CHW connection (PAT RM-2) | 42d | 2012-01-30 | 2012-03-20 | I08P223017C0 |  |  |  |  | 36.05d | 0d | MECHANICAL [901.2 h]; Cost |  |  | I08P223009C0 | IC | C | 08 | P2 | ME | 230 | 09 | BILL 8 | B08 | S2 | 2F | R00 | ACF07 | 230 |  |  |  |  |  |  | 2n | MEP |  |  |  |  |  |  |  |  |  |  |  |
| I08P201005C0 |  | IC-08 ; 2nd, Wall Inspection by Consultant (PAT RM-2) | 0d | 2012-02-18 | 2012-02-18 | I08P222011C0, I08P222015C0, I08P226009C0 |  |  |  |  | 33.05d | 0d | Cost |  |  | I08P201005C0 | IC | C | 08 | P2 | ME | 010 | 05 | BILL 8 | B08 | S2 | WI | R00 | ACF07 | 010 |  |  |  |  |  |  | 2n | MEP |  |  |  |  |  |  |  |  |  |  |  |
| I08P209205C0 |  | IC-08 ; Partitions Closing (PAT RM-2) | 42d | 2012-02-18 | 2012-04-07 | I08P201005C0, I08P205511C0, I08P209203C0, I08P222005C0, I08P222019C0, IAFOA09210C1 FF, I08P208103C0 FF, IAFCI22001R20 FS+72d |  |  |  |  | 33.05d | 0d | PARTITIONS [314 m]; PARTITIONS [3074 h]; Cost |  |  | I08P209205C0 | IC | C | 08 | P2 | PT | 092 | 05 | BILL 8 | B08 | S2 | FF | R00 | ACF06 | 092 |  |  |  |  |  |  |  | GP | P2F |  |  |  |  | 315 | 946 | R3 |  |  |  |
| I08P223008C0 |  | IC-08 ; 1st Fix, Inst of VCD's/FD's (PAT RM-2) | 48d | 2012-02-18 | 2012-04-14 | I08P223023C0, I08P205503C0 FF+18d |  |  |  |  | 57.05d | 24d | MECHANICAL [910.8 h]; Cost |  |  | I08P223008C0 | IC | C | 08 | P2 | ME | 230 | 08 | BILL 8 | B08 | S2 | 1F | R00 | ACF04 | 230 |  |  |  |  |  |  | 1S | MEP | M1F |  |  |  |  |  |  |  |  |  |  |
| I08P223015C0 |  | IC-08 ; 2nd Fix, Insulation of CHW pipe & Duct (PAT RM-2) | 42d | 2012-03-20 | 2012-05-08 | I08P223009C0, I08P223017C0, I08P223023C0 |  |  |  |  | 36.05d | 3d | MECHANICAL [3075.6 h]; Cost |  |  | I08P223015C0 | IC | C | 08 | P2 | ME | 230 | 15 | BILL 8 | B08 | S2 | 2F | R00 | ACF07 | 230 |  |  |  |  |  |  | 2n | MEP |  |  |  |  |  |  |  |  |  |  |  |
| I08P207103C0 |  | IC-08 ; Waterproofing (PAT RM-2) | 11.88d | 2012-04-07 | 2012-04-21 | I08P208103C0, I08P209205C0, IZ9GZ07154R2 FF |  |  |  |  | 101.92d | 0d | THERMAL & MOISTURE [96 h]; THERMAL & MOISTURE [601 m2]; Cost |  |  | I08P207103C0 | IC | C | 08 | P2 | FF | 071 | 03 | BILL 8 | B08 | S2 | 01 | R00 | ACF03 | 071 |  |  |  |  |  |  |  |  |  |  |  |  |  | 105 | 999 |  |  |  |  |
| I08P209901C0 |  | IC-08 ; Wall Prime & 1st coat (PAT RM-2) | 30d | 2012-04-07 | 2012-05-12 | I08P209205C0, I08SE05509C0 |  |  |  |  | 33.05d | 0d | WALL PAINT [579 h]; WALL PAINT [721 m2]; Cost |  |  | I08P209901C0 | IC | C | 08 | P2 | PA | 099 | 01 | BILL 8 | B08 | S2 | 01 | R00 | ACF06 | 099 |  |  |  |  |  |  |  |  |  |  |  |  |  | 328 | 956 |  |  |  |  |
| I08P226005C0 |  | IC-08 ; 2nd Fix, Wiring for Power/Lighting/Emergency (PAT RM-2) | 48d | 2012-04-07 | 2012-06-02 | I08P209205C0 |  |  |  |  | 93.55d | 0d | ELECTRICAL [213.6 h]; Cost |  |  | I08P226005C0 | IC | C | 08 | P2 | ME | 260 | 05 | BILL 8 | B08 | S2 | 2F | R00 | ACF07 | 260 |  |  |  |  |  |  | 2n | MEP |  |  |  |  |  |  |  |  |  |  |  |
| I08P226007C0 |  | IC-08 ; 2nd Fix, Cable Pulling (PAT RM-2) | 48d | 2012-04-07 | 2012-06-02 | I08P209201C0 SS+6d, I08P209205C0 |  |  |  |  | 129.55d | 96.5d | ELECTRICAL [2858.4 h]; Cost |  |  | I08P226007C0 | IC | C | 08 | P2 | ME | 260 | 07 | BILL 8 | B08 | S2 | 2F | R00 | ACF07 | 260 |  |  |  |  |  |  | 2n | MEP |  |  |  |  |  |  |  |  |  |  |  |
| I08P226053C0 |  | IC-08 ; 2nd Fix, Wiring / Cabling (PAT RM-2) | 48d | 2012-04-07 | 2012-06-02 | I08P209203C0, I08P209205C0 |  |  |  |  | 45.05d | 12d | ELECTRICAL [213.6 h]; Cost |  |  | I08P226053C0 | IC | C | 08 | P2 | ME | 260 | 53 | BILL 8 | B08 | S2 | 2F | R00 | ACF07 | 260 |  |  |  |  |  |  | 2n | MEP |  |  |  |  |  | 389 | 977 |  |  |  |  |
| I08P209305C0 |  | IC-08 ; Ceramic floor tile (PAT RM-2) | 21.75d | 2012-04-21 | 2012-05-16 | I08P207103C0 |  |  |  |  | 101.92d | 0d | CERAMIC FLOOR TILES [72 h]; CERAMIC FLOOR TILES [39 m2]; Cost |  |  | I08P209305C0 | IC | C | 08 | P2 | FF | 093 | 05 | BILL 8 | B08 | S2 | 02 | R00 | ACF06 | CT |  |  |  |  |  |  |  |  |  |  |  |  |  | 106 | 1000 |  |  |  |  |
| I08P226011C0 |  | IC-08 ; 2nd Fix, Inst of Equipment (DB) (PAT RM-2) | 66d | 2012-04-26 | 2012-07-12 | I08P209205C0, I08P126011C0 SS+3d |  |  |  |  | 42.25d | 0d | ELECTRICAL [1736.4 h]; Cost |  |  | I08P226011C0 | IC | C | 08 | P2 | ME | 260 | 11 | BILL 8 | B08 | S2 | 2F | R00 | ACF04 | 260 |  |  |  |  |  |  | 2n | MEP |  |  |  |  |  |  |  |  |  |  | E |
| I08P205501C0 |  | IC-08 ; Handrails & balustrade (PAT RM-2) | 30.5d | 2012-05-12 | 2012-06-18 | I08P209901C0, IZ9GZ05152R2 FF |  |  |  |  | 68.55d | 35.5d | SECONDARY STEEL [263 h]; Cost |  |  | I08P205501C0 | IC | C | 08 | P2 | SW | 055 | 01 | BILL 8 | B08 | S2 | 01 | R00 | ACF03 | a |  |  |  |  |  |  |  |  |  |  |  |  |  |  |  |  |  |  |  |
| I08P209501C0 |  | IC-08 ; Ceiling Grid and Service Tile (PAT RM-2) | 30d | 2012-05-12 | 2012-06-17 | I08P205503C0, I08P209205C0, I08P221117C0, I08P223008C0, I08P223009C0, I08P223015C0, I08P227001C0, IAFCI22002R02 FS+72d, I08P226053C0 FF, I08P209901C0 |  |  |  |  | 33.05d | 0d | CEILING GRID FOR GYPSUM [1504.83 h]; CEILING GRID FOR GYPSUM [128.64 m2]; Cost |  |  | I08P209501C0 | IC | C | 08 | P2 | CE | 095 | 01 | BILL 8 | B08 | S2 | 01 | R00 | ACF06 | 095 |  |  |  |  |  |  |  |  |  |  |  |  |  | 323 | 952 |  |  |  |  |
| I08P209510C0 |  | IC-08 ; Patient Lift Ceiling Rail (by others) (PAT RM-2) | 0d | 2012-05-12 | 2012-05-12 | I08P209501C0 SS |  |  |  |  | 147.55d | 114.5d | Cost |  |  | I06P109501C0 | IC | C | 08 | P2 | CE | 095 | 10 | BILL 8 | B08 | S2 | 02 | R00 | ACF06 | 095 |  |  |  |  |  |  |  |  |  |  |  |  |  | 323 | 952 |  |  |  |  |
| I08P222025C0 |  | IC-08 ; Final Fix, Inst of Sanitary Ware (PAT RM-2) | 36d | 2012-05-16 | 2012-06-28 | I08P209205C0, I08P209305C0, A10230 FS+148d |  |  |  |  | 101.92d | 0d | PLUMBING [1315.2 h]; Cost |  |  | I08P222025C0 | IC | C | 08 | P2 | ME | 220 | 25 | BILL 8 | B08 | S2 | FF | R00 | ACF07 | 220 |  |  |  |  |  |  | FF | MEP |  |  |  |  |  |  |  |  |  |  |  |
| I08P226015C0 |  | IC-08 ; Final Fix, Termination & Gladding of Cables (PAT RM-2) | 36d | 2012-06-02 | 2012-07-15 | I08P226005C0 |  |  |  |  | 93.55d | 60.5d | ELECTRICAL [158.4 h]; Cost |  |  | I08P226015C0 | IC | C | 08 | P2 | ME | 260 | 15 | BILL 8 | B08 | S2 | FF | R00 | ACF07 | 260 |  |  |  |  |  |  | FF | MEP |  |  |  |  |  |  |  |  |  |  |  |
| I08P209202C0 |  | IC-08 ; Rolling Shade (PAT RM-2) | 30d | 2012-06-17 | 2012-07-22 | I08P209501C0 |  |  |  |  | 129.43d | 96.38d | PARTITIONS [839 h]; Cost |  |  | I06P109201C0 | IC | C | 08 | P2 | FI | 092 | 02 | BILL 8 | B08 | S2 | 02 | R00 | ACF06 | 092 |  |  |  |  |  |  |  | GP |  |  |  |  |  | 313 | 944 |  |  |  |  |
| I08P209601C0 |  | IC-08 ; Flooring (Rubber,Terrazzo) (PAT RM-2) | 36d | 2012-06-17 | 2012-07-29 | I08P209501C0, I08P205501C0 FF |  |  |  |  | 33.05d | 0d | TERRAZO FLOOR [640 h]; TERRAZO FLOOR [354 m2]; RUBBER FLOOR [289 m2]; RUBBER FLOOR [120 h]; Cost |  |  | I08P209601C0 | IC | C | 08 | P2 | FF | 096 | 01 | BILL 8 | B08 | S2 | 01 | R00 | ACF06 | RF |  |  |  |  |  |  |  |  |  |  |  |  |  | 326 | 955 |  |  |  |  |
| I08P209903C0 |  | IC-08 ; Wall Final Paint (PAT RM-2) | 30d | 2012-06-17 | 2012-07-22 | I08P209901C0, I08P209905C0, I08P209501C0 |  |  |  |  | 129.43d | 72d | WALL PAINT [311 h]; WALL PAINT [388 m2]; Cost |  |  | I08P209903C0 | IC | C | 08 | P2 | PA | 099 | 03 | BILL 8 | B08 | S2 | 02 | R00 | ACF06 | 099 |  |  |  |  |  |  |  |  |  |  |  |  |  | 329 | 957 |  |  |  |  |
| I08P209905C0 |  | IC-08 ; Ceiling Prime & 1st coat (PAT RM-2) | 0d | 2012-06-17 | 2012-06-17 | I08P209501C0 |  |  |  |  | 129.43d | 0d | Cost |  |  | I08P209905C0 | IC | C | 08 | P2 | PA | 099 | 05 | BILL 8 | B08 | S2 | 01 | R00 | ACF06 | 099 |  |  |  |  |  |  |  |  |  |  |  |  |  | 330 | 958 |  |  |  |  |
| I08P221115C0 |  | IC-08 ; 2nd Fix, Inst of Sprinkler droppers (PAT RM-2) | 48d | 2012-06-17 | 2012-08-12 | I08P209501C0 |  |  |  |  | 69.55d | 0d | MECHANICAL [800.4 h]; Cost |  |  | I08P221115C0 | IC | C | 08 | P2 | ME | 211 | 15 | BILL 8 | B08 | S2 | 2F | R00 | ACF07 | 211 |  |  |  |  |  |  | 2n | MEP |  |  |  |  |  |  |  |  |  |  |  |
| I08P223021C0 |  | IC-08 ; 2nd Fix, Inst of Flexible Duct & Plenum boxes (PAT RM-2) | 48d | 2012-06-17 | 2012-08-12 | I08P209205C0, I08P209501C0 |  |  |  |  | 69.55d | 0d | MECHANICAL [72 h]; Cost |  |  | I08P223021C0 | IC | C | 08 | P2 | ME | 230 | 21 | BILL 8 | B08 | S2 | 2F | R00 | ACF07 | 230 |  |  |  |  |  |  | 2n | MEP |  |  |  |  |  |  |  |  |  |  |  |
| I08P226017C0 |  | IC-08 ; Final Fix, Inst of Ceiling rose (PAT RM-2) | 36d | 2012-06-17 | 2012-07-29 | I08P209501C0 |  |  |  |  | 57.55d | 0d | ELECTRICAL [33.6 h]; Cost |  |  | I08P226017C0 | IC | C | 08 | P2 | ME | 260 | 17 | BILL 8 | B08 | S2 | FF | R00 | ACF07 | 260 |  |  |  |  |  |  | FF | MEP |  |  |  |  |  |  |  |  |  |  |  |
| I08P227002C0 |  | IC-08 ; 2nd Fix, Wiring Droppers (PAT RM-2) | 48d | 2012-06-17 | 2012-08-12 | I08P209501C0 |  |  |  |  | 63.55d | 0d | ELECTRICAL [213.6 h]; Cost |  |  | I08P227002C0 | IC | C | 08 | P2 | ME | 270 | 02 | BILL 8 | B08 | S2 | 2F | R00 | ACF07 | 270 |  |  |  |  |  |  | 2n | MEP |  |  |  |  |  |  |  |  |  |  |  |
| I08P227020C0 |  | IC-08 ; 2nd Fix, Inst of ELV Equipment (Panels) (PAT RM-2) | 60d | 2012-06-17 | 2012-08-28 | I08P209205C0, I08P209501C0 |  |  |  |  | 57.55d | 12d | ELECTRICAL [1041.6 h]; Cost |  |  | I08P227020C0 | IC | C | 08 | P2 | ME | 270 | 20 | BILL 8 | B08 | S2 | 2F | R00 | ACF04 | 270 |  |  |  |  |  |  | 2n | MEP |  |  |  |  |  |  |  |  |  |  | E |
| I08P221113C0 |  | IC-08 ; Final Fix, Inst of Sprinklers head/ Extinguisher (PAT RM-2) | 36d | 2012-06-24 | 2012-08-05 | I08P209501C0, I08P221115C0 SS+6d |  |  |  |  | 75.55d | 42.5d | MECHANICAL [152.4 h]; Cost |  |  | I08P221113C0 | IC | C | 08 | P2 | ME | 211 | 13 | BILL 8 | B08 | S2 | FF | R00 | ACF07 | 211 |  |  |  |  |  |  | FF | MEP |  |  |  |  |  |  |  |  |  |  |  |
| I08P223019C0 |  | IC-08 ; Final Fix, Inst of Grilles & Diffusers (PAT RM-2) | 36d | 2012-06-24 | 2012-08-05 | I08P209501C0, I08P223021C0 SS+6d |  |  |  |  | 75.55d | 42.5d | MECHANICAL [757.2 h]; Cost |  |  | I08P223019C0 | IC | C | 08 | P2 | ME | 230 | 19 | BILL 8 | B08 | S2 | FF | R00 | ACF07 | 230 |  |  |  |  |  |  | FF | MEP |  |  |  |  |  |  |  |  |  |  |  |
| I08P226003C0 |  | IC-08 ; Final Fix, Inst of Light fittings (PAT RM-2) | 54d | 2012-06-24 | 2012-08-28 | I08P209501C0, I08P226017C0 SS+6d |  |  |  |  | 57.55d | 24.5d | ELECTRICAL [9577.2 h]; Cost |  |  | I08P226003C0 | IC | C | 08 | P2 | ME | 260 | 03 | BILL 8 | B08 | S2 | FF | R00 | ACF07 | 260 |  |  |  |  |  |  | FF | MEP |  |  |  |  |  |  |  |  |  |  |  |
| I08P227030C0 |  | IC-08 ; Final Fix, Inst of ELV device (Detector/Speaker) (PAT RM-2) | 48d | 2012-06-24 | 2012-08-21 | I08P209501C0, I08P227002C0 SS+6d |  |  |  |  | 63.55d | 30.5d | ELECTRICAL [1707.6 h]; Cost |  |  | I08P227030C0 | IC | C | 08 | P2 | ME | 270 | 30 | BILL 8 | B08 | S2 | FF | R00 | ACF07 | 270 |  |  |  |  |  |  | FF | MEP |  |  |  |  |  |  |  |  |  |  |  |
| I08P222021C0 |  | IC-08 ; Final Fix, Terminate Sanitary Ware & Appliances (PAT RM-2) | 36d | 2012-06-28 | 2012-08-09 | I08P222011C0, I08P222025C0 |  |  |  |  | 101.92d | 68.88d | PLUMBING [1315.2 h]; Cost |  |  | I08P222021C0 | IC | C | 08 | P2 | ME | 220 | 21 | BILL 8 | B08 | S2 | FF | R00 | ACF07 | 220 |  |  |  |  |  |  | FF | MEP |  |  |  |  |  |  |  |  |  |  |  |
| I08P206101C0 |  | IC-08 ; Wood / caseworks (PAT RM-2) | 48d | 2012-07-29 | 2012-09-25 | I08CO04405C0, I08P209501C0, I08P209601C0, I08P209901C0, I08CO04401C0, IAFWA00103M0, IAFCI22002R02 FS+190d |  |  |  |  | 33.05d | 0d | WOOD WORK/CASEWORK [181.51 no]; WOOD WORK/CASEWORK [1456 h]; Cost |  |  | I08P206101C0 | IC | C | 08 | P2 | WO | 061 | 01 | BILL 8 | B08 | S2 | WW | R00 | ACF06 | 061 |  |  |  |  |  |  |  |  |  |  |  |  |  | 332 | 960 |  |  |  |  |
| I08P206102C0 |  | IC-08 ; Head/Foot Wall (PAT RM-2) | 30.5d | 2012-07-29 | 2012-09-05 | I08P209501C0, IAFWA00103M0, IAFCI22002R02 FS+190d, I08P206101C0 SS |  |  |  |  | 33.05d | 0d | WOOD WORK/CASEWORK [1479 h]; Cost |  |  | I08P206102C0 | IC | C | 08 | P2 | WO | 061 | 02 | BILL 8 | B08 | S2 | WW | R00 | ACF06 | 061 |  |  |  |  |  |  |  |  |  |  |  |  |  | 332 | 960 |  |  |  |  |
| I08P208107C0 |  | IC-08 ; Doors (PAT RM-2) | 36d | 2012-07-29 | 2012-09-11 | I08P208103C0, I08P209501C0, I08P209601C0, I08P209901C0, IAFCO08101R2 FF |  |  |  |  | 67.42d | 0d | ASSORTED DOORS [510 h]; ASSORTED DOORS [51 no]; Cost |  |  | I08P208107C0 | IC | C | 08 | P2 | DO | 081 | 07 | BILL 8 | B08 | S2 | DR | R00 | ACF06 | 081 |  |  |  |  |  |  |  |  |  |  |  |  |  | 317 | 948 |  |  | 08 |  |
| I08P209701C0 |  | IC-08 ; Wall finishes (ST, WD, WC) (PAT RM-2) | 36d | 2012-07-29 | 2012-09-11 | I08P226011C0, I08P227020C0 FF, IAFCI22002R02 FS+170d, I08P209601C0 |  |  |  |  | 45.55d | 0d | ASSORTED WALL FINISH [307 h]; ASSORTED WALL FINISH [352 m2]; Cost |  |  | I08P209701C0 | IC | C | 08 | P2 | WF | 097 | 01 | BILL 8 | B08 | S2 | 01 | R00 | ACF06 | 097 |  |  |  |  |  |  |  |  |  |  |  |  |  | 105 | 1002 |  |  |  |  |
| I08P222029C0 |  | IC-08 ; Final Fix, Medical Gas pipe (PAT RM-2) | 18d | 2012-09-05 | 2012-09-26 | I08P209501C0, I08P206102C0 |  |  |  |  | 33.05d | 0d | PLUMBING [328.8 h]; Cost |  |  | I08P222029C0 | IC | C | 08 | P2 | ME | 220 | 29 | BILL 8 | B08 | S2 | FF | R00 | ACF07 | 220 |  |  |  |  |  |  | FF | MEP |  |  |  |  |  |  |  |  |  |  |  |
| I08P208709C0 |  | IC-08 ; Ironmongery (PAT RM-2) | 20d | 2012-09-11 | 2012-10-04 | I08P208107C0 |  |  |  |  | 67.42d | 34.38d | IRONMONGERY [240 h]; IRONMONGERY [24 no]; Cost |  |  | I08P208709C0 | IC | C | 08 | P2 | DO | 087 | 09 | BILL 8 | B08 | S2 | IM | R00 | ACF06 | 087 |  |  |  |  |  |  |  |  |  |  |  |  |  | 322 | 951 |  |  | 08 |  |
| I08P211001C0 |  | IC-08 ; Wall Protection (WP, CG, WG, FCG) (PAT RM-2) | 24d | 2012-09-11 | 2012-10-09 | I08P209701C0, I08P209903C0 SS |  |  |  |  | 63.42d | 30.38d | FF&E [37 h]; Cost |  |  | I08P211001C0 | IC | C | 08 | P2 | WF | 110 | 01 | BILL 8 | B08 | S2 | 03 | R00 | ACF08 | b |  |  |  |  |  |  |  |  |  |  |  |  |  | 326 | 1001 |  |  |  |  |
| I08P201006C0 |  | IC-08 ; 2nd, Ceiling Inspection by Consultants (PAT RM-2) | 0d | 2012-09-26 | 2012-09-26 | I08P221115C0, I08P223009C0, I08P223015C0, I08P227002C0, I08P209501C0, I08P221113C0, I08P222029C0, I08P223019C0, I08P226003C0, I08P226017C0, I08P227030C0, I08P226015C0 |  |  |  |  | 33.05d | 0d | Cost |  |  | I08P201006C0 | IC | C | 08 | P2 | ME | 010 | 06 | BILL 8 | B08 | S2 | CI | R00 | ACF07 | 010 |  |  |  |  |  |  | 2n | MEP |  |  |  |  |  |  |  |  |  |  |  |
| I08P209503C0 |  | IC-08 ; Ceiling closure - ACT/Gypsum (PAT RM-2) | 18d | 2012-09-26 | 2012-10-17 | I08P201006C0, I08P209510C0, I08P221115C0, I08P226005C0, I08P227001C0, I08P227002C0, IAFOA09509C1 FF, I08P206101C0, I08P209701C0, I08P223021C0, I08P226007C0 |  |  |  |  | 33.05d | 0d | ASSORTED CEILING FINISH [308.73 h]; CEILING GYPSUM [42.23 h]; ASSORTED CEILING FINISH [502 m2]; CEILING GYPSUM [129 m2]; Cost |  |  | I08P209503C0 | IC | C | 08 | P2 | CE | 095 | 03 | BILL 8 | B08 | S2 | 02 | R00 | ACF06 | 095 |  |  |  |  |  |  |  |  |  |  |  |  |  | 324 | 953 |  |  |  |  |
| I08P209678C1 |  | IC-08, Carpet Tile Finish (Patient Room-2) | 0d | 2012-10-17 | 2012-10-17 | I08P209903C0 SS, I08P209907C0 SS |  |  |  |  | 56.92d | 23.88d | Cost |  |  |  | IC | C | 08 | P2 | FF | 096 |  |  | B08 |  |  | R00 | ACF06 | CPT |  |  |  |  |  |  |  | CPT |  |  |  |  |  |  |  |  |  |  |  |
| I08P209907C0 |  | IC-08 ; Ceiling Final paint (PAT RM-2) | 0d | 2012-10-17 | 2012-10-17 | I08P209601C0, I08P209905C0, I08P209503C0 |  |  |  |  | 56.92d | 0d | Cost |  |  | I08P209907C0 | IC | C | 08 | P2 | PA | 099 | 07 | BILL 8 | B08 | S2 | 02 | R00 | ACF06 | 099 |  |  |  |  |  |  |  |  |  |  |  |  |  | 331 | 959 |  |  |  |  |
| I08P211003C0 |  | IC-08 ; FF & E (PAT RM-2) | 12d | 2012-10-17 | 2012-11-03 | I08P209601C0, I08P206101C0, I08P209503C0 |  |  |  |  | 44.92d | 11.88d | FF&E [380 h]; FF&E [202.27 no]; Cost |  |  | I08P211003C0 | IC | C | 08 | P2 | WO | 110 | 03 | BILL 8 | B08 | S2 | 04 | R00 | ACF08 | a |  |  |  |  |  |  |  |  |  |  |  |  |  | 333 | 961 |  |  |  |  |
| I08P222027C0 |  | IC-08 ; Final Fix, Inst of All drain (PAT RM-2) | 12d | 2012-10-17 | 2012-11-03 | I08P209305C0, I08P209503C0 |  |  |  |  | 33.05d | 0d | PLUMBING [630 h]; Cost |  |  | I08P222027C0 | IC | C | 08 | P2 | ME | 220 | 27 | BILL 8 | B08 | S2 | FF | R00 | ACF07 | 220 |  |  |  |  |  |  | FF | MEP |  |  |  |  |  |  |  |  |  |  |  |
| I08P226019C0 |  | IC-08 ; Final Fix, Inst of Switch/Sockets (PAT RM-2) | 12d | 2012-10-17 | 2012-11-03 | I08P209901C0, I08P209503C0 |  |  |  |  | 33.05d | 0d | ELECTRICAL [164.4 h]; Cost |  |  | I08P226019C0 | IC | C | 08 | P2 | ME | 260 | 19 | BILL 8 | B08 | S2 | FF | R00 | ACF07 | 260 |  |  |  |  |  |  | FF | MEP |  |  |  |  |  |  |  |  |  |  |  |

| ID | WBS | Activity | Duration | Start | Finish | Predecessors | Complete | Remaining | Planned start | Planned finish | Total float | Free float | Resources | change id | CCAD BUILDING(SET) | CCAD PHASE(SET) | CCAD FLOOR(SET) | CCAD ZONE(SET) | CCAD WORK(SET) | CCAD SECTION(SET) | CCAD SERIAL No.(SET) | CCAD CBS(SET) | CCAD BILL(SET) | CCAD HANDOVER(SET) | CCAD TAG(SET) | CCAD REV(SET) | CCADACF (SET) | CCAD SSCF | Change Order # | NEW ACTIVITY ID | P_811 | P_711 | CCAD CSA | Act Selector % | CCAD DIVISION(SET) | U% | CCAD SUB ZONE MEP(SET) | CCAD MEQ | IDDD |
| --- | --- | --- | --- | --- | --- | --- | --- | --- | --- | --- | --- | --- | --- | --- | --- | --- | --- | --- | --- | --- | --- | --- | --- | --- | --- | --- | --- | --- | --- | --- | --- | --- | --- | --- | --- | --- | --- | --- | --- |
|  | 10 | **Precommissioning Tesing & snagging (PAT RM-2)** |  | 2012-11-03 | 2012-12-09 |  |  |  |  |  |  |  |  |  |  |  |  |  |  |  |  |  |  |  |  |  |  |  |  |  |  |  |  |  |  |  |  |  |  |
| I08TS01805C0 |  | IC-08 ; MEP de-snag, FIREM sign-off | 11.88d | 2012-11-03 | 2012-11-18 | I08P222025C0, I08P222027C0, I08P226015C0, I08P222021C0, I08P221113C0, I08P223019C0, I08P222029C0, I08P226017C0, I08P226003C0, I08P227030C0, I08P226019C0 |  |  |  |  | 33.05d | 0d | TESTING & COMMISSIONING [510 h]; Cost | I08TS01801C0 | IC | C | 08 | TS | SC | 018 | 01 | BILL 8 | B08 | S2 | 01 | R00 | ACF07 | 018 |  |  |  |  |  |  |  |  |  |  |  |
| I08TS01809C0 |  | IC-08 ; Touch-up & Clean / JV inspection /CIR /De-snag | 17.88d | 2012-11-18 | 2012-12-09 | I08CO04402C0, I08CO04403C0, I08CO04405C0, I08CO04406C0, I08P205501C0, I08P205511C0, I08P206101C0, I08P206102C0, I08P207103C0, I08P208103C0, I08P208107C0, I08P208709C0, I08P209201C0, I08P209202C0, I08P209203C0, I08P209205C0, I08P209305C0, I08P209501C0, I08P209503C0, I08P209510C0, I08P209601C0, I08P209701C0, I08P209901C0, I08P209903C0, I08P209905C0, I08P209907C0, I08P211001C0, I08P211003C0, I08P221113C0, I08P222021C0, I08P222025C0, I08P222027C0, I08P222029C0, I08P223019C0, I08P226003C0, I08P226015C0, I08P226017C0, I08P226019C0, I08P227030C0, I08TS01805C0, I08P209678C1 |  |  |  |  | 33.05d | 0d | TESTING & COMMISSIONING [128 h]; Cost | I08TS01802C0 | IC | C | 08 | TS | SC | 018 | 02 | BILL 8 | B08 | S2 | 02 | R00 | ACF07 | 018 |  |  |  |  |  |  |  |  |  |  |  |
| I08TS01813C0 |  | IC-08 ; Consultant's final de-snag inspection | 0d | 2012-12-09 | 2012-12-09 | I08TS01809C0 |  |  |  |  | 33.05d | 12.05d | Cost | I08TS01803C0 | IC | C | 08 | TS | SC | 018 | 03 | BILL 8 | B08 | S2 | 03 | R00 | ACF07 | 018 |  |  |  |  |  |  |  |  |  |  |  |
|  | 06 | **TR Room** |  | 2011-07-10 | 2012-09-02 |  |  |  |  |  |  |  |  |  |  |  |  |  |  |  |  |  |  |  |  |  |  |  |  |  |  |  |  |  |  |  |  |  |  |
| I08TR09201C0 |  | IC-08 ; Metal Studs (TR RM) | 45d | 2011-07-10 A | 2011-11-17 | I08PA09201C0 SS | 15% | 38.25d | 2011-07-14 | 2011-09-07 | 37.75d | 0d | PARTITIONS [289 h]; PARTITIONS - Metal Studs [30 m]; Cost | I08TR09201C0 | IC | C | 08 | TR | PT | 092 | 01 | BILL 8 | B08 | S2 | 1F | R00 | ACF06 | 092 | 313 | 885 | 15 | 10 | GP | PMS |  |  |  |  |  |
| I08TR08101C0 |  | IC-08 ; Door Frames (TR RM) | 18d | 2011-11-17 | 2011-12-11 | I08TR09201C0, GNHE08101C0 FS+69d |  |  |  |  | 83.75d | 55.75d | ASSORTED DOORS [16 h]; Cost | I08TR08101C0 | IC | C | 08 | TR | DO | 081 | 01 | BILL 8 | B08 | S2 | DF | R00 | ACF06 | 081 | 316 | 20001090 |  |  |  |  | 08 |  |  |  |  |
| I08TR09203C0 |  | IC-08 ; Partitions 1st face (TR RM) | 24d | 2011-11-17 | 2011-12-18 | I08TR09201C0 |  |  |  |  | 49.75d | 21.75d | PARTITIONS [30 m]; PARTITIONS [242 h]; Cost | I08TR09203C0 | IC | C | 08 | TR | PT | 092 | 03 | BILL 8 | B08 | S2 | 2F | R00 | ACF06 | 092 | 314 | 886 |  |  | GP | P1F |  | 0 |  |  |  |
| I08TR26026C0 |  | IC-08 ; 2nd Fix, Conduit (TR RM) | 36d | 2011-11-17 | 2012-01-02 | I08TR09201C0 |  |  |  |  | 37.75d | 0d | ELECTRICAL [397.2 h]; Cost | I08TR26026C0 | IC | C | 08 | TR | ME | 260 | 26 | BILL 8 | B08 | S2 | 2F | R00 | ACF07 | 260 |  |  |  |  | MEP |  |  |  | 2n |  |  |
| I08TR01005C0 |  | IC-08 ; 2nd, Wall Inspection by Consultant (TR RM) | 0d | 2012-01-02 | 2012-01-02 | I08TR26026C0 |  |  |  |  | 37.75d | 9.75d | Cost | I08TR01005C0 | IC | C | 08 | TR | ME | 010 | 05 | BILL 8 | B08 | S2 | WI | R00 | ACF07 | 010 |  |  |  |  | MEP |  |  |  | 2n |  |  |
| I08TR09205C0 |  | IC-08 ; Partitions Closing (TR RM) | 28d | 2012-01-14 | 2012-02-15 | I08TR01005C0, I08TR09201C0, I08TR09203C0, IAFOA09210C1 FF, I08TR08101C0 FF, I08PA09205C0 SS |  |  |  |  | 28d | 0d | PARTITIONS [30 m]; PARTITIONS [307 h]; Cost | I08TR09205C0 | IC | C | 08 | TR | PT | 092 | 05 | BILL 8 | B08 | S2 | FF | R00 | ACF06 | 092 | 315 | 887 |  |  | GP | P2F |  |  |  |  |  |
| I08TR09901C0 |  | IC-08 ; Wall Prime & 1st coat (TR RM) | 18d | 2012-02-16 | 2012-03-07 | I08TR09205C0 |  |  |  |  | 28d | 0d | WALL PAINT [58 h]; WALL PAINT [71 m2]; Cost | I08TR09901C0 | IC | C | 08 | TR | PA | 099 | 01 | BILL 8 | B08 | S2 | 01 | R00 | ACF06 | 099 | 360 | 20001110 |  |  |  |  |  |  |  |  |  |
| I08TR23009C0 |  | IC-08 ; 2nd Fix, Inst of VAV'S CHW connection (TR RM) | 36d | 2012-02-16 | 2012-03-28 | I08TR09205C0 |  |  |  |  | 44d | 0d | MECHANICAL [901.2 h]; Cost | I08TR23009C0 | IC | C | 08 | TR | ME | 230 | 09 | BILL 8 | B08 | S2 | 2F | R00 | ACF07 | 230 |  |  |  |  | MEP |  |  |  | 2n |  |  |
| I08TR23011C0 |  | IC-08 ; 2nd Fix, Inst of VCD's/FD's (TR RM) | 36d | 2012-02-16 | 2012-03-28 | I08TR09205C0 |  |  |  |  | 44d | 0d | MECHANICAL [910.8 h]; Cost | I08TR23011C0 | IC | C | 08 | TR | ME | 230 | 11 | BILL 8 | B08 | S2 | 2F | R00 | ACF07 | 230 |  |  |  |  | MEP |  |  |  | 2n |  |  |
| I08TR26007C0 |  | IC-08 ; 2nd Fix, Cable Pulling (TR RM) | 36d | 2012-02-16 | 2012-03-28 | I08TR09203C0, I08TR09205C0 |  |  |  |  | 80d | 36d | ELECTRICAL [2858.4 h]; Cost | I08TR26007C0 | IC | C | 08 | TR | ME | 260 | 07 | BILL 8 | B08 | S2 | 2F | R00 | ACF07 | 260 |  |  |  |  | MEP |  |  |  | 2n |  |  |
| I08TR26009C0 |  | IC-08 ; 2nd Fix, Inst of Equipment (DB, TR, SG,BUS) (TR RM) | 36d | 2012-02-16 | 2012-03-28 | I08TR09205C0 |  |  |  |  | 50d | 0d | ELECTRICAL [6981.6 h]; Cost | I08TR26009C0 | IC | C | 08 | TR | ME | 260 | 09 | BILL 8 | B08 | S2 | 2F | R00 | ACF04 | 260 |  |  |  |  | MEP |  |  |  | 2n | E |  |
| I08TR26027C0 |  | IC-08 ; 2nd Fix, Wiring / Cabling (TR RM) | 36d | 2012-02-16 | 2012-03-28 | I08TR09201C0 SS+6d, I08TR09203C0, I08TR09205C0 |  |  |  |  | 80d | 52d | ELECTRICAL [213.6 h]; Cost | I08TR26027C0 | IC | C | 08 | TR | ME | 260 | 27 | BILL 8 | B08 | S2 | 2F | R00 | ACF07 | 260 | 417 | 1318 |  |  | MEP |  |  |  | 2n |  |  |
| I08TR09501C0 |  | IC-08 ; Ceiling Grid and Service Tile (TR RM) | 24d | 2012-03-08 | 2012-04-04 | I08TR09205C0 SS+15d, I08TR09901C0 |  |  |  |  | 28d | 0d | CEILING GRID FOR GYPSUM [165.58 h]; CEILING GRID FOR GYPSUM [14.22 m2]; Cost | I08TR09501C0 | IC | C | 08 | TR | CE | 095 | 01 | BILL 8 | B08 | S2 | 01 | R00 | ACF06 | 095 | 336 | 1327 |  |  |  |  |  |  |  |  | 1 |
| I08TR09903C0 |  | IC-08 ; Wall - Final Paint (TR RM) | 12d | 2012-03-08 | 2012-03-21 | I08TR09901C0 |  |  |  |  | 130d | 102d | WALL PAINT [31 h]; WALL PAINT [38 m2]; Cost | I08TR09903C0 | IC | C | 08 | TR | PA | 099 | 03 | BILL 8 | B08 | S2 | 02 | R00 | ACF06 | 099 | 361 | 1312 |  |  |  |  |  |  |  |  |  |
| I08TR23013C0 |  | IC-08 ; 2nd Fix, Insulation of CHW pipe & Duct (TR RM) | 36d | 2012-03-29 | 2012-05-09 | I08TR23009C0, I08TR23011C0 |  |  |  |  | 44d | 0d | MECHANICAL [3075.6 h]; Cost | I08TR23013C0 | IC | C | 08 | TR | ME | 230 | 13 | BILL 8 | B08 | S2 | 2F | R00 | ACF07 | 230 |  |  |  |  | MEP |  |  |  | 2n |  |  |
| I08TR26013C0 |  | IC-08 ; Final Fix, Termination & Gladding of Cables (TR RM) | 30d | 2012-03-29 | 2012-05-02 | I08TR26009C0 |  |  |  |  | 50d | 6d | ELECTRICAL [141.6 h]; Cost | I08TR26013C0 | IC | C | 08 | TR | ME | 260 | 13 | BILL 8 | B08 | S2 | FF | R00 | ACF07 | 260 |  |  |  |  | MEP |  |  |  | FF |  |  |
| I08TR09601C0 |  | IC-08 ; Flooring (Rubber, etc) (TR RM) | 28d | 2012-04-05 | 2012-05-07 | I08TR09501C0 |  |  |  |  | 28d | 0d | RUBBER FLOOR [3321 m2]; RUBBER FLOOR [1328 h]; Cost | I08TR09601C0 | IC | C | 08 | TR | FF | 096 | 01 | BILL 8 | B08 | S2 | 03 | R00 | ACF06 | RF | 359 | 20001120 |  |  |  |  |  |  |  |  |  |
| I08TR09905C0 |  | IC-08 ; Ceiling Prime & 1st coat (TR RM) | 0d | 2012-04-05 | 2012-04-05 | I08TR09501C0 |  |  |  |  | 118d | 60d | Cost | I08TR09905C0 | IC | C | 08 | TR | PA | 099 | 05 | BILL 8 | B08 | S2 | 01 | R00 | ACF06 | 099 | 362 | 1313 |  |  |  |  |  |  |  |  |  |
| I08TR23003C0 |  | IC-08 ; Final Fix, Inst of Grilles & Diffusers (TR RM) | 30d | 2012-04-05 | 2012-05-09 | I08TR09501C0 |  |  |  |  | 44d | 0d | MECHANICAL [673.2 h]; Cost | I08TR23003C0 | IC | C | 08 | TR | ME | 230 | 03 | BILL 8 | B08 | S2 | FF | R00 | ACF07 | 230 |  |  |  |  | MEP |  |  |  | FF |  |  |
| I08TR23023C0 |  | IC-08 ; 2nd Fix, Flexible ducts (TR RM) | 36d | 2012-04-05 | 2012-05-16 | I08TR09205C0, I08TR09501C0 |  |  |  |  | 38d | 10d | MECHANICAL [67.2 h]; Cost | I08TR23023C0 | IC | C | 08 | TR | ME | 230 | 23 | BILL 8 | B08 | S2 | 2F | R00 | ACF07 | 230 | 412 | 20001140 |  |  | MEP |  |  |  | 2n |  |  |
| I08TR23074C0 |  | IC-08 ; Final Fix, Grilles, panels & diffusers (TR RM) | 30d | 2012-04-05 | 2012-05-09 | I08TR09501C0 |  |  |  |  | 44d | 0d | MECHANICAL [673.2 h]; Cost | I08TR23074C0 | IC | C | 08 | TR | ME | 230 | 74 | BILL 8 | B08 | S2 | FF | R00 | ACF07 | 230 | 419 | 20001160 |  |  | MEP |  |  |  | FF |  |  |
| I08TR26005C0 |  | IC-08 ; 2nd Fix, Wiring for Power/Lighting/Emergency (TR RM) | 36d | 2012-04-05 | 2012-05-16 | I08TR26026C0, I08TR09501C0 |  |  |  |  | 38d | 10d | ELECTRICAL [213.6 h]; Cost | I08TR26005C0 | IC | C | 08 | TR | ME | 260 | 05 | BILL 8 | B08 | S2 | 2F | R00 | ACF07 | 260 |  |  |  |  | MEP |  |  |  | 2n |  |  |
| I08TR26015C0 |  | IC-08 ; Final Fix, Inst of Ceiling rose (TR RM) | 30d | 2012-04-05 | 2012-05-09 | I08TR09501C0 |  |  |  |  | 44d | 0d | ELECTRICAL [30 h]; Cost | I08TR26015C0 | IC | C | 08 | TR | ME | 260 | 15 | BILL 8 | B08 | S2 | FF | R00 | ACF07 | 260 |  |  |  |  | MEP |  |  |  | FF |  |  |
| I08TR26019C0 |  | IC-08 ; Final Fix, Inst of Light fittings (TR RM) | 30d | 2012-04-05 | 2012-05-09 | I08TR09501C0 |  |  |  |  | 44d | 0d | ELECTRICAL [8512.8 h]; Cost | I08TR26019C0 | IC | C | 08 | TR | ME | 260 | 19 | BILL 8 | B08 | S2 | FF | R00 | ACF07 | 260 |  |  |  |  | MEP |  |  |  | FF |  |  |
| I08TR26076C0 |  | IC-08 ; Final Fix, Lighting fittings (TR RM) | 30d | 2012-04-05 | 2012-05-09 | I08TR09501C0 |  |  |  |  | 44d | 0d | ELECTRICAL [8512.8 h]; Cost | I08TR26076C0 | IC | C | 08 | TR | ME | 260 | 76 | BILL 8 | B08 | S2 | FF | R00 | ACF07 | 260 | 420 | 20001170 |  |  | MEP |  |  |  | FF |  |  |
| I08TR27002C0 |  | IC-08 ; 2nd Fix, Dressing of ELV panels (TR RM) | 36d | 2012-04-05 | 2012-05-16 | I08TR09205C0, I08TR27020C0 SS |  |  |  |  | 34d | 0d | ELECTRICAL [216 h]; Cost | I08TR27002C0 | IC | C | 08 | TR | ME | 270 | 02 | BILL 8 | B08 | S2 | 2F | R00 | ACF07 | 270 |  |  |  |  | MEP |  |  |  | 2n |  |  |
| I08TR27020C0 |  | IC-08 ; 2nd Fix, Inst of ELV Equipment (Panels) (TR RM) | 36d | 2012-04-05 | 2012-05-16 | I08TR09205C0, I08TR09501C0 |  |  |  |  | 34d | 0d | ELECTRICAL [1041.6 h]; Cost | I08TR27020C0 | IC | C | 08 | TR | ME | 270 | 20 | BILL 8 | B08 | S2 | 2F | R00 | ACF04 | 270 |  |  |  |  | MEP |  |  |  | 2n | E |  |
| I08TR08105C0 |  | IC-08 ; Doors (TR RM) | 18d | 2012-05-08 | 2012-05-28 | I08TR08101C0, I08TR09501C0, I08TR09601C0, I08TR09901C0 |  |  |  |  | 60d | 0d | ASSORTED DOORS [50 h]; ASSORTED DOORS [5 no]; Cost | I08TR08105C0 | IC | C | 08 | TR | DO | 081 | 05 | BILL 8 | B08 | S2 | DR | R00 | ACF06 | 081 | 317 | 1325 |  |  |  |  | 08 |  |  |  |  |
| I08TR21115C0 |  | IC-08 ; 2nd Fix, Gaseous Fire Suppression (TR RM) | 18d | 2012-05-08 | 2012-05-28 | I08TR09501C0, I08TR09601C0 |  |  |  |  | 28d | 0d | MECHANICAL [1850.4 h]; Cost | I08TR21115C0 | IC | C | 08 | TR | ME | 211 | 15 | BILL 8 | B08 | S2 | 2F | R00 | ACF07 | 211 | 411 | 20001130 |  |  | MEP |  |  |  | 2n |  |  |
| I08TR01006C0 |  | IC-08 ; 2nd, Ceiling Inspection by Consultants (TR RM) | 0d | 2012-05-10 | 2012-05-10 | I08TR23009C0, I08TR23011C0, I08TR23013C0, I08TR26007C0, I08TR09501C0, I08TR23003C0, I08TR23074C0, I08TR26015C0, I08TR26019C0, I08TR26076C0, I08TR26013C0 |  |  |  |  | 44d | 16d | Cost | I08TR01006C0 | IC | C | 08 | TR | ME | 010 | 06 | BILL 8 | B08 | S2 | CI | R00 | ACF07 | 010 |  |  |  |  | MEP |  |  |  | 2n |  |  |
| I08TR27030C0 |  | IC-08 ; Final Fix, Inst of ELV device (Detector/Speaker) (TR RM) | 30d | 2012-05-17 | 2012-06-21 | I08TR27002C0 |  |  |  |  | 34d | 6d | ELECTRICAL [1518 h]; Cost | I08TR27030C0 | IC | C | 08 | TR | ME | 270 | 30 | BILL 8 | B08 | S2 | FF | R00 | ACF07 | 270 |  |  |  |  | MEP |  |  |  | FF |  |  |
| I08TR08709C0 |  | IC-08 ; Ironmongery (TR RM) | 12d | 2012-05-29 | 2012-06-11 | I08TR08105C0 |  |  |  |  | 60d | 32d | IRONMONGERY [20 h]; IRONMONGERY [2 no]; Cost | I08TR08709C0 | IC | C | 08 | TR | DO | 087 | 09 | BILL 8 | B08 | S2 | IM | R00 | ACF06 | 087 | 322 | 20001100 |  |  |  |  | 08 |  |  |  |  |
| I08TR09503C0 |  | IC-08 ; Ceiling closure (TR RM) | 14d | 2012-05-29 | 2012-06-13 | I08TR01006C0, I08TR09501C0, I08TR21115C0, I08TR26005C0, I08TR26007C0, I08TR26026C0, I08TR26027C0, I08TR23023C0 |  |  |  |  | 28d | 0d | ASSORTED CEILING FINISH [34.44 h]; CEILING GYPSUM [4.71 h]; ASSORTED CEILING FINISH [56 m2]; CEILING GYPSUM [14 m2]; Cost | I08TR09503C0 | IC | C | 08 | TR | CE | 095 | 03 | BILL 8 | B08 | S2 | 02 | R00 | ACF06 | 095 | 337 | 20001080 |  |  |  |  |  |  |  |  |  |
| I08TR09907C0 |  | IC-08 ; Ceiling - Final paint (TR RM) | 0d | 2012-06-14 | 2012-06-14 | I08TR09905C0, I08TR09503C0 |  |  |  |  | 58d | 30d | Cost | I08TR09907C0 | IC | C | 08 | TR | PA | 099 | 07 | BILL 8 | B08 | S2 | 02 | R00 | ACF06 | 099 | 363 | 1314 |  |  |  |  |  |  |  |  |  |
| I08TR26017C0 |  | IC-08 ; Final Fix, Inst of Switch/Sockets (TR RM) | 12d | 2012-06-14 | 2012-06-28 | I08TR09901C0, I08TR09503C0 |  |  |  |  | 28d | 0d | ELECTRICAL [164.4 h]; Cost | I08TR26017C0 | IC | C | 08 | TR | ME | 260 | 17 | BILL 8 | B08 | S2 | FF | R00 | ACF07 | 260 |  |  |  |  | MEP |  |  |  | FF |  |  |
| I08TR01802C0 |  | IC-08 ; MEP de-snag, FIREM sign-off | 18d | 2012-06-30 | 2012-07-19 | I08TR26017C0, I08TR23074C0, I08TR23003C0, I08TR26076C0, I08TR26013C0, I08TR26015C0, I08TR26019C0, I08TR27030C0 |  |  |  |  | 28d | 0d | TESTING & COMMISSIONING [510 h]; Cost | CP3CO01851C0 | IC | C | 08 | TR | SC | 018 | 53 | BILL 8 | B08 | S2 | 01 | R00 | ACF07 | 018 |  |  |  |  |  |  |  |  |  |  |  |
| I08TR01801C0 |  | IC-08 ; Touch-up & Clean / JV inspection /CIR /De-snag | 24d | 2012-07-21 | 2012-08-16 | I08TR01802C0, I08TR08709C0, I08TR09601C0, I08TR09903C0, I08TR09907C0, I08TR09503C0 |  |  |  |  | 28d | 0d | TESTING & COMMISSIONING [128 h]; Cost | I08TR01851C0 | IC | C | 08 | TR | SC | 018 | 51 | BILL 8 | B08 | S2 | 02 | R00 | ACF07 | 018 | 396 |  |  |  |  |  |  |  |  |  |  |
| I08TR01803C0 |  | IC-08 ; Consultant's final de-snag inspection | 12d | 2012-08-18 | 2012-09-02 | I08TR01801C0 |  |  |  |  | 28d | 14d | Labor General [1 h]; Cost | CP3TS01803C0 | IC | C | 08 | TR | SC | 018 | 03 | BILL 8 | B08 | S1 | 03 | R00 | ACF07 | 018 |  |  |  |  |  |  |  |  |  |  |  |

| ID | WBS | Activity | Duration | Start | Finish | Predecessors | Complete | Remaining | Planned start | Planned finish | Total float | Free float | Resources | Cost | Actual cost | change id | July2011 Target% Complete | Claimed This Month | N_% | P_811 | P_711 | U% | CCAD BUILDING(SET) | CCAD PHASE(SET) | CCAD FLOOR(SET) | CCAD ZONE(SET) | CCAD WORK(SET) | CCAD SECTION(SET) | CCAD SERIAL No.(SET) | CCAD SUB ZONE MEP(SET) | CCAD CBS(SET) | CCAD BILL(SET) | CCAD HANDOVER(SET) | CCAD TAG(SET) | CCAD REV(SET) | CCADACF (SET) | CCAD CSA | CCAD SSCF | Act Selector % | user_number8 | user_integer1 | user_integer2 | user_number7 | Change Order # | NEW ACTIVITY ID | R3 Partitions | FILTER | CCAD DIVISION(SET) | CCAD MEQ |
| --- | --- | --- | --- | --- | --- | --- | --- | --- | --- | --- | --- | --- | --- | --- | --- | --- | --- | --- | --- | --- | --- | --- | --- | --- | --- | --- | --- | --- | --- | --- | --- | --- | --- | --- | --- | --- | --- | --- | --- | --- | --- | --- | --- | --- | --- | --- | --- | --- | --- |
|  | 05 | **Corridor, Central Station** |  | 2011-06-05 | 2012-11-20 |  |  |  |  |  |  |  |  |  |  |  |  |  |  |  |  |  |  |  |  |  |  |  |  |  |  |  |  |  |  |  |  |  |  |  |  |  |  |  |  |  |  |  |  |
| I08PA23001C0 |  | IC-08 ; 1st Fix, Inst. of Supports for MEP (Public Area) | 90d | 2011-06-05 A | 2011-10-16 | I08S107807C0, I08S207807C0 | 85% | 13.5d | 2011-06-05 | 2011-09-21 | 28.3d | 0d | MECHANICAL [577.2 h]; Cost [32540.2 AED] | 32,540.18 | 27,659.15 | I08PA23001C0 | 30 | 11323.98 | 30 | 80 | 30 | 85 | IC | C | 08 | PA | ME | 230 | 01 | 1S | BILL 8 | B08 | S2 | 1F | R00 | ACF04 | MEP | 230 | M1F |  |  |  |  |  |  |  |  |  |  |
| I08PA09201C0 |  | IC-08 ; Metal Studs (Public Area) | 42d | 2011-06-19 A | 2011-11-14 | I08PA23001C0 SS+12d | 15% | 35.7d | 2011-06-19 | 2011-08-08 | 28.3d | 0d | PARTITIONS [4417 h]; PARTITIONS - Metal Studs [453 m]; Cost |  |  | I08PA09201C0 |  | 22822.89 |  |  |  |  | IC | C | 08 | PA | PT | 092 | 01 |  | BILL 8 | B08 | S2 | 1F | R00 | ACF06 | GP | 092 | PMS | 0 | 0 | 0 | 0 | 313 | 944 | R3 |  |  |  |
| I08PA21111C0 |  | IC-08 ; 1st Fix, Inst of Sprinkler main pipe (Public Area) | 84d | 2011-06-26 A | 2011-11-29 | I08PA22005C0 SS+14d, I08PA23001C0 | 60% | 33.6d | 2011-09-19 | 2012-01-02 | 57.6d | 0d | MECHANICAL [264 h]; Cost [14398.4 AED] | 14,398.38 | 8,639.03 | I08PA21111C0 |  | 1671.29 | 25 | 30 | 25 | 60 | IC | C | 08 | PA | ME | 211 | 11 | 1S | BILL 8 | B08 | S2 | 1F | R00 | ACF04 | MEP | 211 | M1F | 0 | 0 | 0 | 0 |  |  |  |  |  |  |
| I08PA22019C0 |  | IC-08 ; 1st Fix, Inst of Drainage pipe (ceiling) (Public Area) | 84d | 2011-06-26 A | 2011-12-10 | I08PA23001C0, I08PA26013C0 SS+14d | 50% | 42d | 2011-08-17 | 2011-11-30 | 49.9d | 0d | PLUMBING [630 h]; Cost [34080.3 AED] | 34,080.3 | 17,040.15 | I08PA22019C0 | 20 | 3950.73 | 35 | 30 | 20 | 50 | IC | C | 08 | PA | ME | 220 | 19 | 1S | BILL 8 | B08 | S2 | 1F | R00 | ACF04 | MEP | 220 | M1F | 0 | 0 | 0 | 0 |  |  |  |  |  |  |
| I08PA21117C0 |  | IC-08 ; 1st Fix, Inst of Sprinkler branch pipe (Public Area) | 84d | 2011-07-10 A | 2012-01-09 | I08PA09201C0, I08PA21111C0 | 60% | 33.6d | 2011-11-22 | 2012-03-04 | 124.8d | 69.35d | MECHANICAL [609.6 h]; Cost [33303.7 AED] | 33,303.68 | 19,982.21 | I08PA21117C0 |  |  | 20 | 30 | 20 | 60 | IC | C | 08 | PA | ME | 211 | 17 | 1S | BILL 8 | B08 | S2 | 1F | R00 | ACF04 | MEP | 211 | M1F | 0 | 0 | 0 | 0 |  |  |  |  |  |  |
| I08PA26001C0 |  | IC-08 ; 1st Fix, Inst of Trunking/Conduiting (Public Area) | 72d | 2011-07-10 A | 2011-12-19 | I08PA23001C0, I08S107807C0, I08S207807C0 | 30% | 50.4d | 2011-07-26 | 2011-10-20 | 49.9d | 0d | ELECTRICAL [397.2 h]; Cost [20466.7 AED] | 20,466.68 | 6,140 | I08PA26001C0 | 5 | 1187.84 | 10 | 20 | 10 |  | IC | C | 08 | PA | ME | 260 | 01 | 1S | BILL 8 | B08 | S2 | 1F | R00 | ACF04 | MEP | 260 | M1F | 0 | 0 | 0 | 0 |  |  |  |  |  |  |
| I08PA26013C0 |  | IC-08 ; 1st Fix, Inst of Cable Tray (Public Area) | 84d | 2011-07-10 A | 2011-12-29 | I08PA23001C0, I08PA27010C0 SS+10d, I08S107807C0, I08S207807C0 | 30% | 58.8d | 2011-08-23 | 2011-12-07 | 49.9d | 0d | ELECTRICAL [205.2 h]; Cost [11036 AED] | 11,035.96 | 3,310.79 | I08PA26013C0 | 20 |  | 30 | 30 | 20 | 30 | IC | C | 08 | PA | ME | 260 | 13 | 1S | BILL 8 | B08 | S2 | 1F | R00 | ACF04 | MEP | 260 | M1F | 0 | 0 | 0 | 0 |  |  |  |  |  |  |
| I08PA27010C0 |  | IC-08 ; 1st Fix, Inst of Trunking for ELV system (Public Area) | 66d | 2011-08-10 A | 2011-12-22 | I08PA23001C0, I08PA26001C0 SS+14d, I08S107807C0, I08S207807C0 | 20% | 52.8d | 2011-08-24 | 2011-11-15 | 49.9d | 0d | ELECTRICAL [914.4 h]; Cost [47960 AED] | 47,960.04 | 9,592.01 | I08PA27010C0 | 5 |  |  | 10 | 0 | 20 | IC | C | 08 | PA | ME | 270 | 10 | 1S | BILL 8 | B08 | S2 | 1F | R00 | ACF04 | MEP | 270 | M1F | 0 | 0 | 0 | 0 |  |  |  | zero |  |  |
| I08PA09203C0 |  | IC-08 ; Partitions early wall & 1st face (Public Area) | 33d | 2011-09-05 A | 2011-12-21 | I08PA09201C0 | 10% | 29.7d | 2011-09-01 | 2011-10-09 | 46.6d | 18.6d | PARTITIONS [453 m]; PARTITIONS [3449 h]; Cost |  |  | I08PA09203C0 |  |  |  |  |  |  | IC | C | 08 | PA | PT | 092 | 03 |  | BILL 8 | B08 | S2 | 2F | R00 | ACF06 | GP | 092 | P1F |  |  |  |  | 314 | 945 |  |  |  |  |
| I08PA22005C0 |  | IC-08 ; 1st Fix, Inst of Water supply pipe (ceiling) (Public Area) | 54d | 2011-09-05 A | 2011-12-18 | I08PA22019C0 SS+12d, I08PA23001C0 | 10% | 48.6d | 2011-09-26 | 2011-12-04 | 49.9d | 0d | PLUMBING [1670.4 h]; Cost [90220.7 AED] | 90,220.67 | 9,022.07 | I08PA22005C0 |  |  |  |  |  |  | IC | C | 08 | PA | ME | 220 | 05 | 1S | BILL 8 | B08 | S2 | 1F | R00 | ACF04 | MEP | 220 | M1F |  |  |  |  |  |  |  |  |  |  |
| I08PA23017C0 |  | IC-08 ; 1st Fix, Inst of CHW pipe (Public Area) | 54d | 2011-09-05 A | 2011-11-27 | I08PA21111C0 SS+14d, I08PA23001C0 | 40% | 32.4d | 2011-10-12 | 2011-12-20 | 57.6d | 0d | MECHANICAL [2832 h]; Cost [154640 AED] | 154,640.47 | 61,856.19 | I08PA23017C0 |  |  |  |  |  | 20 | IC | C | 08 | PA | ME | 230 | 17 | 1S | BILL 8 | B08 | S2 | 1F | R00 | ACF04 | MEP | 230 | M1F |  |  |  |  |  |  |  |  |  |  |
| I08PA23023C0 |  | IC-08 ; 1st Fix, Inst of Main Ducting (Public Area) | 66d | 2011-09-05 A | 2011-12-22 | I08PA23001C0, I08PA23017C0 SS+10d | 20% | 52.8d | 2011-10-24 | 2012-01-16 | 85.2d | 0d | MECHANICAL [7574.4 h]; Cost [413624 AED] | 413,624.26 | 82,724.85 | I08PA23023C0 |  |  |  |  |  | 20 | IC | C | 08 | PA | ME | 230 | 23 | 1S | BILL 8 | B08 | S2 | 1F | R00 | ACF04 | MEP | 230 | M1F |  |  |  |  |  |  |  |  |  |  |
| I08PA08103C0 |  | IC-08 ; Door Frames (Public Area) | 36d | 2011-11-14 | 2011-12-28 | I08PA09201C0, GNHE08101C0 FS+69d |  |  |  |  | 76.35d | 48.35d | ASSORTED DOORS [233 h]; Cost |  |  | I08PA08103C0 |  |  |  |  |  |  | IC | C | 08 | PA | DO | 081 | 03 |  | BILL 8 | B08 | S2 | DF | R00 | ACF06 |  | 081 |  |  |  |  |  | 316 | 947 |  |  | 08 |  |
| I08PA22011C0 |  | IC-08 ; 2nd Fix, Drainage/Water pipe (wall) (Public Area) | 48d | 2011-11-14 | 2012-01-12 | I08PA09201C0 |  |  |  |  | 28.3d | 0d | PLUMBING [630 h]; Cost |  |  | I08PA22011C0 |  |  |  |  |  |  | IC | C | 08 | PA | ME | 220 | 11 | 2n | BILL 8 | B08 | S2 | 2F | R00 | ACF07 | MEP | 220 |  |  |  |  |  |  |  |  |  |  |  |
| I08PA26009C0 |  | IC-08 ; 2nd Fix, Inst of Wall conduites (Public Area) | 48d | 2011-11-14 | 2012-01-12 | I08PA09201C0 |  |  |  |  | 28.3d | 0d | ELECTRICAL [397.2 h]; Cost |  |  | I08PA26009C0 |  |  |  |  |  |  | IC | C | 08 | PA | ME | 260 | 09 | 2n | BILL 8 | B08 | S2 | 2F | R00 | ACF07 | MEP | 260 |  |  |  |  |  |  |  |  |  |  |  |
| I08PA40302C0 |  | IC-08 ; 2nd Fix, Pneumatic tube (Public Area) | 48d | 2011-11-14 | 2012-01-12 | I08PA09201C0 |  |  |  |  | 28.3d | 0d | MECHANICAL [2031.6 h]; Cost |  |  | C03E140302C0 |  |  |  |  |  |  | IC | C | 08 | PA | ME | 403 | 02 | 2n | BILL 8 | B08 | S2 | 2F | R00 | ACF07 | MEP | 403 |  |  |  |  |  |  |  |  |  |  |  |
| I08PA23009C0 |  | IC-08 ; 2nd Fix, Inst of VAV'S CHW connection (Public Area) | 48d | 2011-11-27 | 2012-01-24 | I08PA23017C0 |  |  |  |  | 57.6d | 0d | MECHANICAL [901.2 h]; Cost |  |  | I08PA23009C0 |  |  |  |  |  |  | IC | C | 08 | PA | ME | 230 | 09 | 2n | BILL 8 | B08 | S2 | 2F | R00 | ACF07 | MEP | 230 |  |  |  |  |  |  |  |  |  |  |  |
| I08PA23008C0 |  | IC-08 ; 1st Fix, Inst of VCD's/FD's (Public Area) | 48d | 2011-12-22 | 2012-02-19 | I08PA23023C0 |  |  |  |  | 91.2d | 35.75d | MECHANICAL [910.8 h]; Cost |  |  | I08PA23008C0 |  |  |  |  |  |  | IC | C | 08 | PA | ME | 230 | 08 | 1S | BILL 8 | B08 | S2 | 1F | R00 | ACF04 | MEP | 230 | M1F |  |  |  |  |  |  |  |  |  |  |
| I08PA27001C0 |  | IC-08 ; 1st Fix, Wiring/ Cabling work (Public Area) | 48d | 2011-12-29 | 2012-02-26 | I08PA26001C0, I08PA26013C0, I08PA27010C0 |  |  |  |  | 85.2d | 29.75d | ELECTRICAL [213.6 h]; Cost |  |  | I08PA27001C0 |  |  |  |  |  |  | IC | C | 08 | PA | ME | 270 | 01 | 1S | BILL 8 | B08 | S2 | 1F | R00 | ACF04 | MEP | 270 | M1F |  |  |  |  |  |  |  |  |  |  |
| I08PA01005C0 |  | IC-08 ; 2nd, Wall Inspection by Consultant (Public Area) | 0d | 2012-01-12 | 2012-01-12 | I08PA22011C0, I08PA26009C0, I08PA40302C0 |  |  |  |  | 28.3d | 0.3d | Cost |  |  | I08PA01005C0 |  |  |  |  |  |  | IC | C | 08 | PA | ME | 010 | 05 | 2n | BILL 8 | B08 | S2 | WI | R00 | ACF07 | MEP | 010 |  |  |  |  |  |  |  |  |  |  |  |
| I08PA09205C0 |  | IC-08 ; Partitions Closing (Public Area) | 36.05d | 2012-01-14 | 2012-02-26 | I08PA01005C0, I08PA09203C0, I08PA22005C0, I08PA22019C0, IAFOA09210C1 FF, IAFCI22001R02 FS+72d, I08PA08103C0 FF |  |  |  |  | 28d | 0d | PARTITIONS [453 m]; PARTITIONS [4413 h]; Cost |  |  | I08PA09205C0 |  |  |  |  |  |  | IC | C | 08 | PA | PT | 092 | 05 |  | BILL 8 | B08 | S2 | FF | R00 | ACF06 | GP | 092 | P2F |  |  |  |  | 315 | 946 | R3 |  |  |  |
| I08PA23015C0 |  | IC-08 ; 2nd Fix, Insulation of CHW pipe & Duct (Public Area) | 54d | 2012-01-24 | 2012-03-28 | I08PA23009C0, I08PA23017C0, I08PA23023C0 |  |  |  |  | 57.6d | 2.15d | MECHANICAL [3075.6 h]; Cost |  |  | I08PA23015C0 |  |  |  |  |  |  | IC | C | 08 | PA | ME | 230 | 15 | 2n | BILL 8 | B08 | S2 | 2F | R00 | ACF07 | MEP | 230 |  |  |  |  |  |  |  |  |  |  |  |
| I08PA09901C0 |  | IC-08 ; Wall Prime & 1st coat (Public Area) | 30d | 2012-02-26 | 2012-04-01 | I08PA09205C0 |  |  |  |  | 55.45d | 0d | WALL PAINT [830 h]; WALL PAINT [1036 m2]; Cost |  |  | I08PA09901C0 |  |  |  |  |  |  | IC | C | 08 | PA | PA | 099 | 01 |  | BILL 8 | B08 | S2 | 01 | R00 | ACF06 |  | 099 |  |  |  |  |  | 328 | 956 |  |  |  |  |
| I08PA26005C0 |  | IC-08 ; 2nd Fix, Wiring for Power/Lighting/Emergency (Public Area) | 48d | 2012-02-26 | 2012-04-22 | I08PA09205C0 |  |  |  |  | 121.45d | 0d | ELECTRICAL [213.6 h]; Cost |  |  | I08PA26005C0 |  |  |  |  |  |  | IC | C | 08 | PA | ME | 260 | 05 | 2n | BILL 8 | B08 | S2 | 2F | R00 | ACF07 | MEP | 260 |  |  |  |  |  |  |  |  |  |  |  |
| I08PA26007C0 |  | IC-08 ; 2nd Fix, Cable Pulling (Public Area) | 48d | 2012-02-26 | 2012-04-22 | I08PA09201C0 SS+6d, I08PA09205C0 |  |  |  |  | 157.45d | 108.95d | ELECTRICAL [2858.4 h]; Cost |  |  | I08PA26007C0 |  |  |  |  |  |  | IC | C | 08 | PA | ME | 260 | 07 | 2n | BILL 8 | B08 | S2 | 2F | R00 | ACF07 | MEP | 260 |  |  |  |  |  |  |  |  |  |  |  |
| I08PA26053C0 |  | IC-08 ; 2nd Fix, Wiring / Cabling (Public Area) | 48d | 2012-02-26 | 2012-04-22 | I08PA09203C0, I08PA09205C0 |  |  |  |  | 73.45d | 18d | ELECTRICAL [213.6 h]; Cost |  |  | I08PA26053C0 |  |  |  |  |  |  | IC | C | 08 | PA | ME | 260 | 53 | 2n | BILL 8 | B08 | S2 | 2F | R00 | ACF07 | MEP | 260 |  |  |  |  |  | 389 | 977 |  |  |  |  |
| I08PA05501C0 |  | IC-08 ; Handrails & balustrade (Public Area) | 36d | 2012-04-01 | 2012-05-13 | I08PA09901C0, IAFT805509C0 |  |  |  |  | 103.45d | 42d | SECONDARY STEEL [362 h]; Cost |  |  | I08PA05501C0 |  |  |  |  |  |  | IC | C | 08 | PA | SW | 055 | 01 |  | BILL 8 | B08 | S2 | 01 | R00 | ACF03 |  | a |  |  |  |  |  |  |  |  |  |  |  |
| I08PA09501C0 |  | IC-08 ; Ceiling Grid and Service Tile (Public Area) | 36d | 2012-04-01 | 2012-05-13 | I08PA09205C0, I08PA21117C0, I08PA23008C0, I08PA23009C0, I08PA23015C0, I08PA27001C0, IAFCI22002R02 FS+72d, I08PA26053C0 FF, I08PA09901C0 |  |  |  |  | 55.45d | 0d | CEILING GRID FOR GYPSUM [2074.62 h]; CEILING GRID FOR GYPSUM [177.49 m2]; Cost |  |  | I08PA09501C0 |  |  |  |  |  |  | IC | C | 08 | PA | CE | 095 | 01 |  | BILL 8 | B08 | S2 | 01 | R00 | ACF06 |  | 095 |  |  |  |  |  | 323 | 952 |  |  |  |  |
| I08PA27020C0 |  | IC-08 ; 2nd Fix, Inst of ELV Equipment (Panels) (Public Area) | 60d | 2012-04-08 | 2012-06-18 | I08PA09205C0, I08PA09501C0 SS+6d |  |  |  |  | 73.45d | 24.95d | ELECTRICAL [1041.6 h]; Cost |  |  | I08PA27020C0 |  |  |  |  |  |  | IC | C | 08 | PA | ME | 270 | 20 | 2n | BILL 8 | B08 | S2 | 2F | R00 | ACF04 | MEP | 270 |  |  |  |  |  |  |  |  |  |  | E |
| I08PA26015C0 |  | IC-08 ; Final Fix, Termination & Gladding of Cables (Public Area) | 36d | 2012-04-22 | 2012-06-03 | I08PA26005C0 |  |  |  |  | 121.45d | 66d | ELECTRICAL [158.4 h]; Cost |  |  | I08PA26015C0 |  |  |  |  |  |  | IC | C | 08 | PA | ME | 260 | 15 | FF | BILL 8 | B08 | S2 | FF | R00 | ACF07 | MEP | 260 |  |  |  |  |  |  |  |  |  |  |  |
| I08PA26011C0 |  | IC-08 ; 2nd Fix, Inst of Equipment (DB) (Public Area) | 66d | 2012-04-30 | 2012-07-16 | I08PA09205C0, I08P226011C0 SS+3d |  |  |  |  | 42.25d | 0d | ELECTRICAL [1736.4 h]; Cost |  |  | I08PA26011C0 |  |  |  |  |  |  | IC | C | 08 | PA | ME | 260 | 11 | 2n | BILL 8 | B08 | S2 | 2F | R00 | ACF04 | MEP | 260 |  |  |  |  |  |  |  |  |  |  | E |
| I08PA09601C0 |  | IC-08 ; Flooring (Terrazzo) (Public Area) | 42d | 2012-05-13 | 2012-07-02 | I08PA09501C0, I08PA05501C0 FF |  |  |  |  | 61.45d | 0d | TERRAZO FLOOR [880 h]; TERRAZO FLOOR [488 m2]; Cost |  |  | I08PA09601C0 |  |  |  |  |  |  | IC | C | 08 | PA | FF | 096 | 01 |  | BILL 8 | B08 | S2 | 07 | R00 | ACF06 |  | TZ |  |  |  |  |  | 326 | 955 |  |  |  |  |
| I08PA09602C0 |  | IC-08 ; Flooring (Stone) (Public Area) | 42d | 2012-05-13 | 2012-07-02 | I08PA09501C0 |  |  |  |  | 61.45d | 0d | STONE FLOOR [704 h]; STONE FLOOR [779 m2]; Cost |  |  | I08PA09601C0 |  |  |  |  |  |  | IC | C | 08 | PA | FF | 096 | 01 |  | BILL 8 | B08 | S2 | 09 | R00 | ACF06 |  | ST |  |  |  |  |  | 326 | 955 |  |  |  |  |
| I08PA09903C0 |  | IC-08 ; Wall Final Paint (Public Area) | 30d | 2012-05-13 | 2012-06-18 | I08PA09901C0, I08PA09905C0, I08PA09501C0 |  |  |  |  | 162.7d | 90.95d | WALL PAINT [447 h]; WALL PAINT [558 m2]; Cost |  |  | I08PA09903C0 |  |  |  |  |  |  | IC | C | 08 | PA | PA | 099 | 03 |  | BILL 8 | B08 | S2 | 02 | R00 | ACF06 |  | 099 |  |  |  |  |  | 329 | 957 |  |  |  |  |
| I08PA09905C0 |  | IC-08 ; Ceiling Prime & 1st coat (Public Area) | 0d | 2012-05-13 | 2012-05-13 | I08PA09501C0 |  |  |  |  | 162.7d | 0d | Cost |  |  | I08PA09905C0 |  |  |  |  |  |  | IC | C | 08 | PA | PA | 099 | 05 |  | BILL 8 | B08 | S2 | 01 | R00 | ACF06 |  | 099 |  |  |  |  |  | 330 | 958 |  |  |  |  |
| I08PA21115C0 |  | IC-08 ; 2nd Fix, Inst of Sprinkler droppers (Public Area) | 48d | 2012-05-13 | 2012-07-09 | I08PA09501C0 |  |  |  |  | 55.45d | 0d | MECHANICAL [800.4 h]; Cost |  |  | I08PA21115C0 |  |  |  |  |  |  | IC | C | 08 | PA | ME | 211 | 15 | 2n | BILL 8 | B08 | S2 | 2F | R00 | ACF07 | MEP | 211 |  |  |  |  |  |  |  |  |  |  |  |
| I08PA23021C0 |  | IC-08 ; 2nd Fix, Inst of Flexible Duct & Plenum boxes (Public Area) | 48d | 2012-05-13 | 2012-07-09 | I08PA09205C0, I08PA09501C0 |  |  |  |  | 55.45d | 0d | MECHANICAL [72 h]; Cost |  |  | I08PA23021C0 |  |  |  |  |  |  | IC | C | 08 | PA | ME | 230 | 21 | 2n | BILL 8 | B08 | S2 | 2F | R00 | ACF07 | MEP | 230 |  |  |  |  |  |  |  |  |  |  |  |
| I08PA26017C0 |  | IC-08 ; Final Fix, Inst of Ceiling rose (Public Area) | 36d | 2012-05-13 | 2012-06-25 | I08PA09501C0 |  |  |  |  | 79.45d | 0d | ELECTRICAL [33.6 h]; Cost |  |  | I08PA26017C0 |  |  |  |  |  |  | IC | C | 08 | PA | ME | 260 | 17 | FF | BILL 8 | B08 | S2 | FF | R00 | ACF07 | MEP | 260 |  |  |  |  |  |  |  |  |  |  |  |
| I08PA27002C0 |  | IC-08 ; 2nd Fix, Wiring Droppers (Public Area) | 48d | 2012-05-13 | 2012-07-09 | I08PA09501C0 |  |  |  |  | 85.45d | 0d | ELECTRICAL [213.6 h]; Cost |  |  | I08PA27002C0 |  |  |  |  |  |  | IC | C | 08 | PA | ME | 270 | 02 | 2n | BILL 8 | B08 | S2 | 2F | R00 | ACF07 | MEP | 270 |  |  |  |  |  |  |  |  |  |  |  |
| I08PA40303C0 |  | IC-08 ; Final Fix, Pneumatic Station (Public Area) | 48d | 2012-05-13 | 2012-07-09 | I08PA09501C0 |  |  |  |  | 91.45d | 36d | MECHANICAL [2031.6 h]; Cost |  |  | C03E140303C0 |  |  |  |  |  |  | IC | C | 08 | PA | ME | 403 | 03 | FF | BILL 8 | B08 | S2 | FF | R00 | ACF07 | MEP | 403 |  |  |  |  |  |  |  |  |  |  |  |
| I08PA26003C0 |  | IC-08 ; Final Fix, Inst of Light fittings (Public Area) | 54d | 2012-05-20 | 2012-07-23 | I08PA09501C0, I08PA26017C0 SS+6d |  |  |  |  | 79.45d | 24d | ELECTRICAL [9577.2 h]; Cost |  |  | I08PA26003C0 |  |  |  |  |  |  | IC | C | 08 | PA | ME | 260 | 03 | FF | BILL 8 | B08 | S2 | FF | R00 | ACF07 | MEP | 260 |  |  |  |  |  |  |  |  |  |  |  |
| I08PA27030C0 |  | IC-08 ; Final Fix, Inst of ELV device (Detector/Speaker) (Public Area) | 48d | 2012-05-20 | 2012-07-16 | I08PA09501C0, I08PA27002C0 SS+6d |  |  |  |  | 85.45d | 30d | ELECTRICAL [1707.6 h]; Cost |  |  | I08PA27030C0 |  |  |  |  |  |  | IC | C | 08 | PA | ME | 270 | 30 | FF | BILL 8 | B08 | S2 | FF | R00 | ACF07 | MEP | 270 |  |  |  |  |  |  |  |  |  |  |  |
| I08PA08107C0 |  | IC-08 ; Doors (Public Area) | 36d | 2012-07-02 | 2012-08-13 | I08PA08103C0, I08PA09501C0, I08PA09601C0, I08PA09901C0, I08PA09602C0 |  |  |  |  | 90.7d | 0d | ASSORTED DOORS [740 h]; ASSORTED DOORS [74 no]; Cost |  |  | I08PA08107C0 |  |  |  |  |  |  | IC | C | 08 | PA | DO | 081 | 07 |  | BILL 8 | B08 | S2 | DR | R00 | ACF06 |  | 081 |  |  |  |  |  | 317 | 948 |  |  | 08 |  |
| I08PA21113C0 |  | IC-08 ; Final Fix, Inst of Sprinklers head/ Extinguisher (Public Area) | 36d | 2012-07-09 | 2012-08-22 | I08PA09501C0, I08PA21115C0 |  |  |  |  | 55.45d | 0d | MECHANICAL [152.4 h]; Cost |  |  | I08PA21113C0 |  |  |  |  |  |  | IC | C | 08 | PA | ME | 211 | 13 | FF | BILL 8 | B08 | S2 | FF | R00 | ACF07 | MEP | 211 |  |  |  |  |  |  |  |  |  |  |  |
| I08PA23019C0 |  | IC-08 ; Final Fix, Inst of Grilles & Diffusers (Public Area) | 36d | 2012-07-09 | 2012-08-22 | I08PA09501C0, I08PA23021C0 |  |  |  |  | 55.45d | 0d | MECHANICAL [757.2 h]; Cost |  |  | I08PA23019C0 |  |  |  |  |  |  | IC | C | 08 | PA | ME | 230 | 19 | FF | BILL 8 | B08 | S2 | FF | R00 | ACF07 | MEP | 230 |  |  |  |  |  |  |  |  |  |  |  |
| I08PA09701C0 |  | IC-08 ; Wall finishes (ST, WD, WC) (Public Area) | 36d | 2012-07-17 | 2012-08-29 | I08PA26011C0, I08PA27020C0, TVT0114211C0, TVT0214211C0, TVT1214211C0, IAFCI22002R02 FS+170d, I08PA09602C0, I08PA09601C0 |  |  |  |  | 48.5d | 0d | ASSORTED WALL FINISH [440 h]; ASSORTED WALL FINISH [505 m2]; Cost |  |  | I08PA09701C0 |  |  |  |  |  |  | IC | C | 08 | PA | WF | 097 | 01 |  | BILL 8 | B08 | S2 | 01 | R00 | ACF06 |  | 097 |  |  |  |  |  | 105 | 1002 |  |  |  |  |
| I08PA08709C0 |  | IC-08 ; Ironmongery (Public Area) | 24d | 2012-08-13 | 2012-09-12 | I08PA08107C0 |  |  |  |  | 90.7d | 42.2d | IRONMONGERY [340 h]; IRONMONGERY [34 no]; Cost |  |  | I08PA08709C0 |  |  |  |  |  |  | IC | C | 08 | PA | DO | 087 | 09 |  | BILL 8 | B08 | S2 | IM | R00 | ACF06 |  | 087 |  |  |  |  |  | 322 | 951 |  |  | 08 |  |
| I08PA01006C0 |  | IC-08 ; 2nd, Ceiling Inspection by Consultants (Public Area) | 0d | 2012-08-22 | 2012-08-22 | I08PA21115C0, I08PA23009C0, I08PA23015C0, I08PA27002C0, I08PA09501C0, I08PA21113C0, I08PA23019C0, I08PA26003C0, I08PA26017C0, I08PA27030C0, I08PA40303C0, I08PA26015C0 |  |  |  |  | 55.45d | 6.95d | Cost |  |  | I08PA01006C0 |  |  |  |  |  |  | IC | C | 08 | PA | ME | 010 | 06 | 2n | BILL 8 | B08 | S2 | CI | R00 | ACF07 | MEP | 010 |  |  |  |  |  |  |  |  |  |  |  |
| I08PA09503C0 |  | IC-08 ; Ceiling closure - ACT/Gypsum (Public Area) | 24d | 2012-08-30 | 2012-09-26 | I08PA01006C0, I08PA21115C0, I08PA26005C0, I08PA27001C0, I08PA27002C0, IAFOA09509C1 FF, I08PA09701C0, DP2CO09500R02 FF, I08PA23021C0, I08PA26007C0 |  |  |  |  | 48.5d | 0d | ASSORTED CEILING FINISH [426.19 h]; CEILING GYPSUM [58.22 h]; ASSORTED CEILING FINISH [693 m2]; CEILING GYPSUM [177 m2]; Cost |  |  | I08PA09503C0 |  |  |  |  |  |  | IC | C | 08 | PA | CE | 095 | 03 |  | BILL 8 | B08 | S2 | 02 | R00 | ACF06 |  | 095 |  |  |  |  |  | 324 | 953 |  |  |  |  |
| I08PA11001C0 |  | IC-08 ; Wall Protection (WP, CG, WG, FCG) (Public Area) | 24d | 2012-08-30 | 2012-09-26 | I08PA09701C0, I08PA09903C0 SS |  |  |  |  | 77.75d | 29.25d | FF&E [53 h]; Cost |  |  | I08PA11001C0 |  |  |  |  |  |  | IC | C | 08 | PA | WF | 110 | 01 |  | BILL 8 | B08 | S2 | 03 | R00 | ACF08 |  | b |  |  |  |  |  | 326 | 1001 |  |  |  |  |
| I08PA11009C0 |  | IC-08 ; Signage (Public Area) | 14d | 2012-08-30 | 2012-09-15 | I08PA09701C0 |  |  |  |  | 87.75d | 39.25d | SIGNAGES [167 h]; SIGNAGES [167.03 no]; Cost |  |  | I08PA11009C0 |  |  |  |  |  |  | IC | C | 08 | PA | SA | 110 | 09 |  | BILL 8 | B08 | S2 | 09 | R00 | ACF08 |  | c |  |  |  |  |  | 322 | 951 |  |  | 08 |  |
| I08PA09907C0 |  | IC-08 ; Ceiling Final paint (Public Area) | 0d | 2012-09-27 | 2012-09-27 | I08PA09601C0, I08PA09905C0, I08PA09602C0, I08PA09503C0 |  |  |  |  | 77.75d | 29.25d | Cost |  |  | I08PA09907C0 |  |  |  |  |  |  | IC | C | 08 | PA | PA | 099 | 07 |  | BILL 8 | B08 | S2 | 02 | R00 | ACF06 |  | 099 |  |  |  |  |  | 331 | 959 |  |  |  |  |
| I08PA26019C0 |  | IC-08 ; Final Fix, Inst of Switch/Sockets (Public Area) | 18d | 2012-09-27 | 2012-10-17 | I08PA09901C0, I08PA09503C0 |  |  |  |  | 48.5d | 0d | ELECTRICAL [164.4 h]; Cost |  |  | I08PA26019C0 |  |  |  |  |  |  | IC | C | 08 | PA | ME | 260 | 19 | FF | BILL 8 | B08 | S2 | FF | R00 | ACF07 | MEP | 260 |  |  |  |  |  |  |  |  |  |  |  |

| ID | WBS | Activity | Type | Duration | Start | Finish | Predecessors | Complete | Planned start | Planned finish | Total float | Free float | Resources | change id | CCAD BUILDING(SET) | CCAD PHASE(SET) | CCAD FLOOR(SET) | CCAD ZONE(SET) | CCAD WORK(SET) | CCAD SECTION(SET) | CCAD SERIAL No.(SET) | CCAD CBS(SET) | CCAD BILL(SET) | CCAD HANDOVER(SET) | CCAD TAG(SET) | CCAD REV(SET) | CCADACF (SET) | CCAD SSCF | RENZ % COMPLETE | Phase | Area/ Department | Grids | Are | Weight & Nos | Process | Levels | CCAD CSA | Claimed This Month | Change Order # | NEW ACTIVITY ID |
| --- | --- | --- | --- | --- | --- | --- | --- | --- | --- | --- | --- | --- | --- | --- | --- | --- | --- | --- | --- | --- | --- | --- | --- | --- | --- | --- | --- | --- | --- | --- | --- | --- | --- | --- | --- | --- | --- | --- | --- | --- |
|  | 10 | **Precommissioning Tesing & snagging (Corridor, Central Station)** |  |  | 2012-10-18 | 2012-11-20 |  |  |  |  |  |  |  |  |  |  |  |  |  |  |  |  |  |  |  |  |  |  |  |  |  |  |  |  |  |  |  |  |  |  |
| I08TS01806C0 |  | IC-08 ; MEP de-snag, FIREM sign-off |  | 11.25d | 2012-10-18 | 2012-11-03 | I08PA26015C0, I08PA21113C0, I08PA23019C0, I08PA26017C0, I08PA26003C0, I08PA27030C0, I08PA40303C0, I08PA26019C0 |  |  |  | 48.5d | 0d | TESTING & COMMISSIONING [510 h]; Cost | I08TS01801C0 | IC | C | 08 | TS | SC | 018 | 01 | BILL 8 | B08 | S2 | 01 | R00 | ACF07 | 018 |  |  |  |  |  |  |  |  |  |  |  |  |
| I08TS01810C0 |  | IC-08 ; Touch-up & Clean / JV inspection /CIR /De-snag |  | 14.25d | 2012-11-03 | 2012-11-20 | I08CO04402C0, I08CO04403C0, I08CO04405C0, I08CO04406C0, I08PA05501C0, I08PA08103C0, I08PA08107C0, I08PA08709C0, I08PA09201C0, I08PA09203C0, I08PA09205C0, I08PA09501C0, I08PA09503C0, I08PA09601C0, I08PA09701C0, I08PA09901C0, I08PA09903C0, I08PA09905C0, I08PA09907C0, I08PA11001C0, I08PA11009C0, I08PA21113C0, I08PA23019C0, I08PA26003C0, I08PA26015C0, I08PA26017C0, I08PA26019C0, I08PA27030C0, I08PA40303C0, I08TS01806C0, I08PA09602C0 |  |  |  | 48.5d | 0d | TESTING & COMMISSIONING [128 h]; Cost | I08TS01802C0 | IC | C | 08 | TS | SC | 018 | 02 | BILL 8 | B08 | S2 | 02 | R00 | ACF07 | 018 |  |  |  |  |  |  |  |  |  |  |  |  |
| I08TS01814C0 |  | IC-08 ; Consultant's final de-snag inspection |  | 0d | 2012-11-20 | 2012-11-20 | I08TS01810C0 |  |  |  | 48.5d | 27.5d | Cost | I08TS01803C0 | IC | C | 08 | TS | SC | 018 | 03 | BILL 8 | B08 | S2 | 03 | R00 | ACF07 | 018 |  |  |  |  |  |  |  |  |  |  |  |  |
|  | 09 | **Level 8 Low Roof** |  |  | 2010-12-23 | 2012-11-27 |  |  |  |  |  |  |  |  |  |  |  |  |  |  |  |  |  |  |  |  |  |  |  |  |  |  |  |  |  |  |  |  |  |  |
|  | 01 | **Structure & Envelopment** |  |  | 2010-12-23 | 2012-09-15 |  |  |  |  |  |  |  |  |  |  |  |  |  |  |  |  |  |  |  |  |  |  |  |  |  |  |  |  |  |  |  |  |  |  |
| IR8SB03303C0 |  | IC-R8 ; Corewall Concrete (Zone SB) |  | 3d | 2010-12-23 A | 2010-12-30 A | I08SB03303C0 | 100% | 2011-01-17 | 2011-01-19 |  |  | CONCRETE [7840 h]; CONCRETE [197 m3]; Cost | IR8SB03303C0 | IC | C | R8 | SB | CT | 033 | 03 | BILL 8 | B08 | S2 | 04 | R00 | ACF03 | 033 | 100 |  |  |  |  |  |  |  |  |  |  |  |
| IR8SE03305C0 |  | IC-R8 ; Corewall Concrete (Zone SE) |  | 5d | 2010-12-23 A | 2010-12-30 A | I08SE03305C0 | 100% | 2011-01-25 | 2011-01-30 |  |  | CONCRETE [1824 h]; CONCRETE [46 m3]; Cost | IR8SE03305C0 | IC | C | R8 | SE | CT | 033 | 05 | BILL 8 | B08 | S2 | 04 | R00 | ACF03 | 033 | 100 |  |  |  |  |  |  |  |  |  |  |  |
| IR8S205101C0 |  | IC-R8 ; Erection of Structural Steel of 9th Floor (Zone S2) |  | 6.5d | 2011-01-25 A | 2011-05-30 A | I08S205103C0, IR8SE03305C0 | 100% | 2011-04-20 | 2011-04-27 |  |  | STRUCTURAL STEEL [1212 h]; STRUCTURAL STEEL [45 T(Fe)]; Cost | IR8S205101C0 | IC | C | R8 | S2 | ST | 051 | 01 | BILL 8 | B08 | S2 | 01 | R00 | ACF03 | 051 | 100 | Z2 | IC | 6T | K1 | A8A | EREC | 6FLR | ST |  |  |  |
| IR8S205103C0 |  | IC-R8 ; Alignment & welding of 9th Floor steels (Zone S2) |  | 10d | 2011-01-29 A | 2011-05-30 A | IR8S205101C0 | 100% | 2011-04-28 | 2011-05-10 |  |  | STRUCTURAL STEEL [993 h]; Cost | IR8S205103C0 | IC | C | R8 | S2 | ST | 051 | 03 | BILL 8 | B08 | S2 | 02 | R00 | ACF03 | 051 | 100 | Z2 | IC | 6T | K1 | A8A | EREC | 6FLR | ST |  |  |  |
| IR8S105101C0 |  | IC-R8 ; Erection of Structural Steel of 9th Floor (Zone S1) |  | 4.66d | 2011-02-06 A | 2011-04-17 A | I08S105103C0, IR8SB03303C0 | 100% | 2011-02-08 | 2011-02-13 |  |  | STRUCTURAL STEEL [1287 h]; STRUCTURAL STEEL [47 T(Fe)]; Cost | IR8S105101C0 | IC | C | R8 | S1 | ST | 051 | 01 | BILL 8 | B08 | S2 | 01 | R00 | ACF03 | 051 | 100 | Z2 | IC | 6T | K1 | A8A | EREC | 6FLR | ST |  |  |  |
| IR8S105103C0 |  | IC-R8 ; Alignment & welding of 9th Floor (Zone S1) |  | 6d | 2011-02-14 A | 2011-04-19 A | IR8S105101C0 SS+4d | 100% | 2011-02-13 | 2011-02-20 |  |  | STRUCTURAL STEEL [470 h]; Cost | IR8S105103C0 | IC | C | R8 | S1 | ST | 051 | 03 | BILL 8 | B08 | S2 | 02 | R00 | ACF03 | 051 | 100 | Z2 | IC | 6T | K1 | A8A | EREC | 6FLR | ST |  |  |  |
| IR8S105305C0 |  | IC-R8 ; Metal Decking Lvl- 9 (Zone S1) |  | 12d | 2011-04-20 A | 2011-05-17 A | IR8S105103C0, T09CO05115C0 | 100% | 2011-04-30 | 2011-05-14 |  |  | METAL DECKING [686 h]; METAL DECKING [868 m2]; Cost | IR8S105305C0 | IC | C | R8 | S1 | ST | 053 | 05 | BILL 8 | B08 | S2 | 03 | R00 | ACF03 | 053 | 100 | Z2 | IC | 6T | K1 | A8A | MDEC | 6FLR | ST |  |  |  |
| IR8S205305C0 |  | IC-R8 ; Metal Decking Lvl - 9 (Zone S2) |  | 14d | 2011-05-05 A | 2011-06-02 A | IR8S205103C0 | 100% | 2011-06-05 | 2011-06-21 |  |  | METAL DECKING [1419 h]; METAL DECKING [1795 m2]; Cost | IR8S205305C0 | IC | C | R8 | S2 | ST | 053 | 05 | BILL 8 | B08 | S2 | 03 | R00 | ACF03 | 053 | 95 | Z2 | IC | 6T | K1 | A8A | MDEC | 6FLR | ST | 10589.69 |  |  |
| IR8S203399C0 |  | IC-R8 ; Concrete on Metal Decking Lvl - 9 (Zone S2) |  | 9d | 2011-05-10 A | 2011-06-30 A | IR8S205305C0 | 100% | 2011-06-21 | 2011-07-03 |  |  | CONCRETE [13320 h]; CONCRETE [335 m3]; Cost | IR8S205335C0 | IC | C | R8 | S2 | CT | 033 | 99 | BILL 8 | B08 | S2 | 08 | R00 | ACF03 | 033 | 95 | Z2 | IC | 6T | K1 | A8A | MDEC | 6FLR |  |  |  |  |
| IR8S103399C0 |  | IC-R8 ; Concrete on Metal Decking Lvl- 9 (Zone S1) |  | 10d | 2011-05-15 A | 2011-05-30 A | IR8S105305C0 | 100% | 2011-06-05 | 2011-06-16 |  |  | CONCRETE [13320 h]; CONCRETE [335 m3]; Cost | IR8S105335C0 | IC | C | R8 | S1 | CT | 033 | 99 | BILL 8 | B08 | S2 | 08 | R00 | ACF03 | 033 | 100 | Z2 | IC | 6T | K1 | A8A | MDEC | 6FLR |  |  |  |  |
| IR8S107807C0 |  | IC-R8 ; Cementitious Fire proofing at Lvl 9 (Zone S1) |  | 10d | 2011-06-02 A | 2011-06-30 A | I08S107807C0 | 100% | 2011-05-31 | 2011-06-12 |  |  | CEMENTITIOUS FIREPROOFING [1081 h]; CEMENTITIOUS FIREPROOFING [2161 m2]; Cost | IR8S107807C0 | IC | C | R8 | S1 | ST | 078 | 07 | BILL 8 | B08 | S2 | 04 | R00 | ACF03 | 078 |  | Z2 | IC | 6T | K1 | A8A | FIRE | 6FLR | ST |  |  |  |
| IR8S207807C0 |  | IC-R8 ; Cementitious Fire proofing at Lvl 9 (Zone S2) |  | 14.07d | 2011-07-10 A | 2011-08-30 A | I08S207807C0 | 100% | 2011-06-30 | 2011-07-17 |  |  | CEMENTITIOUS FIREPROOFING [2234 h]; CEMENTITIOUS FIREPROOFING [4467 m2]; Cost | IR8S207807C0 | IC | C | R8 | S2 | ST | 078 | 07 | BILL 8 | B08 | S2 | 04 | R00 | ACF03 | 078 |  | Z2 | IC | 6T | K1 | A8A | FIRE | 6FLR | ST |  |  |  |
| IR8CO04403C0 |  | IC-R8 ; C4 Bracket (Common Zone) |  | 6d | 2011-10-01 | 2011-10-06 | IR8S107807C0, IR8S207807C0 |  |  |  | 294d | 0d | FACADE CURTAIN WALL 2 [183.5 h]; Cost | IR8CO04403C0 | IC | C | R8 | CO | FA | 044 | 03 | BILL 8 | B08 | S2 | FC4 | R00 | ACF05 | 044 |  |  |  |  |  |  |  |  | FA |  |  |  |
| IR8CO04406C0 |  | IC-R8 ; C4 Transom & Mullion (Common Zone) |  | 18d | 2011-10-08 | 2011-10-27 | IR8CO04403C0, IR8S103399C0, IR8S203399C0 |  |  |  | 345d | 0d | FACADE CURTAIN WALL 2 [733.7 h]; Cost | IR8CO04406C0 | IC | C | R8 | CO | FA | 044 | 06 | BILL 8 | B08 | S2 | FC4 | R00 | ACF05 | 044 |  |  |  |  |  |  |  |  | FA |  |  |  |
| IR8CO04409C10 |  | IC-R8 ; M2 Bracket (Common Zone) |  | 12d | 2011-10-11 | 2011-10-24 | IR8S107807C0, IR8S207807C0, I08CO04403C0, IR8CO04403C0, I05CO04403C0 SS, I08CO04405C0 SS+24d |  |  |  | 291d | 0d | FACADE METAL PANEL 2 [6892.8 h]; Cost | I08CO04409C0 | IC | C | R8 | CO | FA | 044 | 09 | BILL 8 | B08 | S2 | FM2 | R00 | ACF05 | 044 |  |  |  |  |  |  |  |  | FA |  |  |  |
| IR8CO04411C0 |  | IC-R8 ; M2 External Partition (Common Zone) |  | 18d | 2011-10-25 | 2011-11-17 | IR8CO04409C10, IR8GN02705C0 FF |  |  |  | 318d | 0d | FACADE METAL PANEL 2 [11488.1 h]; Cost | I08CO04411C0 | IC | C | R8 | CO | FA | 044 | 11 | BILL 8 | B08 | S2 | FM2 | R00 | ACF05 | 044 |  |  |  |  |  |  |  |  | FA |  |  |  |
| IR8CO04405C0 |  | IC-R8 ; C4 Glazing (Common Zone) |  | 6d | 2011-10-29 | 2011-11-03 | IR8CO04406C0, IR8GN02705C0 FF |  |  |  | 345d | 0d | FACADE CURTAIN WALL 2 [5376.2 h]; FACADE CURTAIN WALL 2 [1965 m2]; FACADE TOTAL QUANTITY m2 [1965 m2]; Cost | IR8CO04405C0 | IC | C | R8 | CO | FA | 044 | 05 | BILL 8 | B08 | S2 | FC4 | R00 | ACF05 | 044 |  |  |  |  |  |  |  |  | FA |  |  |  |
| IR8GN02705C0 |  | IC-R8 ; Temporary Enclosure | level of effort | 147.2d | 2011-10-31 | 2012-04-28 | IR8PA09203C0 SS, IR8M109203C0 SS |  |  |  | 201.5d | 0d | Labor General [0.6 h]; Cost |  | IC | C | R8 | GEN | FA | GEN |  |  | B08 |  | TE | R00 | ACF05 | 010 |  |  |  |  |  |  |  |  | FA |  |  |  |
| IR8CO04407C10 |  | IC-R8 ; M2 Metal Panel (Common Zone) |  | 18d | 2011-11-19 | 2011-12-11 | IR8CO04411C0 |  |  |  | 318d | 243.28d | FACADE METAL PANEL 2 [27570.5 h]; Cost | I08CO04407C0 | IC | C | R8 | CO | FA | 044 | 07 | BILL 8 | B08 | S2 | FM2 | R00 | ACF05 | 044 |  |  |  |  |  |  |  |  | FA |  |  |  |
| IR8CO04401C0 |  | IC-R8 ; S1 Ex. partitions (Common Zone) |  | 26d | 2012-03-28 | 2012-04-28 | I08CO04401C0 SS+6d, IR8GN02705C0 FF, AAFCI04401R02 FS+148d |  |  |  | 108.75d | 0d | FACADE STONE PANEL 1 [302.1 h]; Cost | CP2CO04401C0 | IC | C | R8 | CO | FA | 044 | 01 | BILL 8 | B08 | S1 | FS1 | R00 | ACF05 | 044 |  |  |  |  |  |  |  |  | FA |  | 164 | 87 |
| IR8CO04402C0 |  | IC-R8 ; S1 onyx stone facade (Common Zone) |  | 24d | 2012-04-28 | 2012-05-26 | IR8CO04401C0, AAFCI04401R02 FS+148d, IV10AF04407R2 FF |  |  |  | 177.5d | 102.78d | FACADE STONE PANEL 1 [1407.8 h]; Cost | CP2CO04411C0 | IC | C | R8 | CO | FA | 044 | 11 | BILL 8 | B08 | S1 | FS1 | R00 | ACF05 | 044 |  |  |  |  |  |  |  |  | FA |  | 167 | 90 |
| IR8CO04455C0 |  | IC-R8 ; S1 Inner Side of External Partition (Common Zone) |  | 12d | 2012-04-28 | 2012-05-12 | IR8CO04401C0, IR8PA09205C0 SS, AAFCI04401R02 FS+148d |  |  |  | 108.75d | 0d | FACADE STONE PANEL 1 [302.1 h]; Cost | DP3CO04415C0 | IC | C | R8 | CO | FA | 044 | 15 | BILL 5 | B08 | S1 | FS1 | R00 | ACF05 | 044 |  |  |  |  |  |  |  |  | FA |  |  |  |
| IR8CO04409C0 |  | IC-R8 ; Louvers Bracket (Common Zone) |  | 12d | 2012-06-17 | 2012-07-01 | IR8S107807C0, IR8S207807C0, IR8CO04409C10 SS, IEXCO04405C0 |  |  |  | 84.7d | 0d | FACADE SAND LOUVERS [49.3 h]; Cost | IR8CO04409C0 | IC | C | R8 | CO | FA | 044 | 09 | BILL 8 | B08 | S2 | FSL | R00 | ACF05 | 044 |  |  |  |  |  |  |  |  | FA |  |  |  |
| IR8CO04408C0 |  | IC-R8 ; Louvers rockwool transom & mullion (Common Zone) |  | 18d | 2012-07-01 | 2012-07-22 | IR8CO04409C0 |  |  |  | 84.7d | 0d | FACADE SAND LOUVERS [81.9 h]; Cost | IR8CO04408C0 | IC | C | R8 | CO | FA | 044 | 08 | BILL 8 | B08 | S2 | FSL | R00 | ACF05 | 044 |  |  |  |  |  |  |  |  | FA |  |  |  |
| IR8CO04415C0 |  | IC-R8 ; PSG Steel grill transom & mullion (Common Zone) |  | 18d | 2012-07-01 | 2012-07-22 | IR8CO04409C0, IR8S107807C0, IR8S207807C0 |  |  |  | 84.7d | 0d | FACADE STEEL GRILL [129.1 h]; Cost | I05CO04415C0 | IC | C | R8 | CO | FA | 044 | 15 | BILL 8 | B08 | S2 | PSG | R00 | ACF05 | 044 |  |  |  |  |  |  |  |  | FA |  |  |  |
| IR8CO04407C0 |  | IC-R8 ; Louvers rockwool installation (Common Zone) |  | 45d | 2012-07-22 | 2012-09-15 | IR8CO04408C0 |  |  |  | 84.7d | 9.97d | FACADE SAND LOUVERS [195.9 h]; Cost | IR8CO04407C0 | IC | C | R8 | CO | FA | 044 | 07 | BILL 8 | B08 | S2 | FSL | R00 | ACF05 | 044 |  |  |  |  |  |  |  |  | FA |  |  |  |
| IR8CO04412C0 |  | IC-R8 ; PSG Steel grill (Common Zone) |  | 45d | 2012-07-22 | 2012-09-15 | IR8CO04415C0 |  |  |  | 84.7d | 0d | FACADE STEEL GRILL [793.8 h]; FACADE STEEL GRILL [580 m2]; FACADE TOTAL QUANTITY m2 [580 m2]; Cost | I05CO04411C0 | IC | C | R8 | CO | FA | 044 | 11 | BILL 8 | B08 | S2 | PSG | R00 | ACF05 | 044 |  |  |  |  |  |  |  |  | FA |  |  |  |
| IR8CO04413C0 |  | IC-R8 ; PSG Steel grill Bracket (Common Zone) |  | 12d | 2012-07-22 | 2012-08-05 | IR8CO04412C0 SS |  |  |  | 117.7d | 42.98d | FACADE STEEL GRILL [32.2 h]; Cost | I05CO04407C0 | IC | C | R8 | CO | FA | 044 | 07 | BILL 8 | B08 | S2 | PSG | R00 | ACF05 | 044 |  |  |  |  |  |  |  |  | FA |  |  |  |

| ID | WBS | Activity | Duration | Start | Finish | Predecessors | Complete | Remaining | Planned start | Planned finish | Total float | Free float | Resources | Cost | Actual cost | change id | N_% | U% | CCAD BUILDING(SET) | CCAD PHASE(SET) | CCAD FLOOR(SET) | CCAD ZONE(SET) | CCAD WORK(SET) | CCAD SECTION(SET) | CCAD SERIAL No.(SET) | CCAD SUB ZONE MEP(SET) | CCAD CBS(SET) | CCAD BILL(SET) | CCAD HANDOVER(SET) | CCAD TAG(SET) | CCAD REV(SET) | CCADACF (SET) | CCAD CSA | CCAD SSCF | Act Selector % | Change Order # | NEW ACTIVITY ID | CCAD DIVISION(SET) | TO BE DELETED | CCAD MEQ |
| --- | --- | --- | --- | --- | --- | --- | --- | --- | --- | --- | --- | --- | --- | --- | --- | --- | --- | --- | --- | --- | --- | --- | --- | --- | --- | --- | --- | --- | --- | --- | --- | --- | --- | --- | --- | --- | --- | --- | --- | --- |
|  | 02 | **Public Area ( Elev.Lobby & Corridors )** |  | 2011-09-05 | 2012-11-27 |  |  |  |  |  |  |  |  |  |  |  |  |  |  |  |  |  |  |  |  |  |  |  |  |  |  |  |  |  |  |  |  |  |  |  |
| IR8PA21111C0 |  | IC-R8 ; 1st Fix, Inst of Sprinkler main pipe (Public Area) | 48d | 2011-09-05 A | 2011-12-11 | IR8PA22005C0 SS+12d, IR8PA23001C0 | 20% | 38.4d | 2012-01-05 | 2012-03-01 | 64.95d | 0d | MECHANICAL [264 h]; Cost [14398.4 AED] | 14,398.38 | 2,879.68 | I08PA21111C0 | 20 | 20 | IC | C | R8 | PA | ME | 211 | 11 | 1S | BILL 8 | B08 | S2 | 1F | R00 | ACF04 | MEP | 211 | M1F |  |  |  |  |  |
| IR8PA21117C0 |  | IC-R8 ; 1st Fix, Inst of Sprinkler branch pipe (Public Area) | 48d | 2011-09-05 A | 2012-01-26 | IR8PA09201C0, IR8PA21111C0 | 20% | 38.4d | 2012-03-03 | 2012-04-26 | 98.15d | 42.9d | MECHANICAL [609.6 h]; Cost [33303.7 AED] | 33,303.68 | 6,660.74 | I08PA21117C0 | 20 | 20 | IC | C | R8 | PA | ME | 211 | 17 | 1S | BILL 8 | B08 | S2 | 1F | R00 | ACF04 | MEP | 211 | M1F |  |  |  |  |  |
| IR8PA22019C0 |  | IC-R8 ; 1st Fix, Inst of Drainage pipe (ceiling) (Public Area) | 48d | 2011-09-05 A | 2011-11-29 | IR8PA23001C0, IR8PA26013C0 SS+14d | 15% | 40.8d | 2011-12-10 | 2012-02-05 | 64.95d | 0d | PLUMBING [630 h]; Cost [34080.3 AED] | 34,080.3 | 5,112.05 | I08PA22019C0 | 30 | 15 | IC | C | R8 | PA | ME | 220 | 19 | 1S | BILL 8 | B08 | S2 | 1F | R00 | ACF04 | MEP | 220 | M1F |  |  |  |  |  |
| IR8PA23001C0 |  | IC-R8 ; 1st Fix, Inst. of Supports for MEP (Public Area) | 42d | 2011-09-05 A | 2011-10-08 | IR8S107807C0, IR8S207807C0 | 85% | 6.3d | 2011-09-01 | 2011-10-19 | 64.95d | 0d | MECHANICAL [577.2 h]; Cost [32540.2 AED] | 32,540.18 | 27,659.15 | I08PA23001C0 | 20 | 85 | IC | C | R8 | PA | ME | 230 | 01 | 1S | BILL 8 | B08 | S2 | 1F | R00 | ACF04 | MEP | 230 | M1F |  |  |  |  |  |
| IR8PA26001C0 |  | IC-R8 ; 1st Fix, Inst of Trunking/Conduiting (Public Area) | 48d | 2011-09-05 A | 2011-11-24 | IR8PA23001C0, IR8S107807C0, IR8S207807C0 | 20% | 38.4d | 2011-10-20 | 2011-12-20 | 64.95d | 0d | ELECTRICAL [397.2 h]; Cost [20466.7 AED] | 20,466.68 | 4,093.34 | I08PA26001C0 |  |  | IC | C | R8 | PA | ME | 260 | 01 | 1S | BILL 8 | B08 | S2 | 1F | R00 | ACF04 | MEP | 260 | M1F |  |  |  |  |  |
| IR8PA26013C0 |  | IC-R8 ; 1st Fix, Inst of Cable Tray (Public Area) | 48d | 2011-09-05 A | 2011-11-24 | IR8PA23001C0, IR8PA27010C0 SS+10d, IR8S107807C0, IR8S207807C0 | 20% | 38.4d | 2011-11-21 | 2012-01-18 | 64.95d | 0d | ELECTRICAL [205.2 h]; Cost [11036 AED] | 11,035.96 | 2,207.19 | I08PA26013C0 | 30 | 20 | IC | C | R8 | PA | ME | 260 | 13 | 1S | BILL 8 | B08 | S2 | 1F | R00 | ACF04 | MEP | 260 | M1F |  |  |  |  |  |
| IR8PA27010C0 |  | IC-R8 ; 1st Fix, Inst of Trunking for ELV system (Public Area) | 48d | 2011-09-05 A | 2011-11-24 | IR8PA23001C0, IR8PA26001C0 SS+14d, IR8S107807C0, IR8S207807C0 | 20% | 38.4d | 2011-11-09 | 2012-01-07 | 64.95d | 0d | ELECTRICAL [914.4 h]; Cost [47960 AED] | 47,960.04 | 9,592.01 | I08PA27010C0 |  | 20 | IC | C | R8 | PA | ME | 270 | 10 | 1S | BILL 8 | B08 | S2 | 1F | R00 | ACF04 | MEP | 270 | M1F |  |  |  |  |  |
| IR8PA09201C0 |  | IC-R8 ; Metal Studs (Public Area) | 12d | 2011-10-01 | 2011-10-13 | IR8PA23001C0 SS+12d |  |  |  |  | 73.25d | 0d | PARTITIONS [87 h]; PARTITIONS - Metal Studs [65 m]; Cost |  |  | I08PA09201C0 |  |  | IC | C | R8 | PA | PT | 092 | 01 |  | BILL 8 | B08 | S2 | 1F | R00 | ACF06 | GP | 092 | PMS | 313 | 944 |  |  |  |
| IR8PA22005C0 |  | IC-R8 ; 1st Fix, Inst of Water supply pipe (ceiling) (Public Area) | 48d | 2011-10-08 | 2011-12-08 | IR8PA22019C0 SS+10d, IR8PA23001C0 |  |  |  |  | 64.95d | 0d | PLUMBING [1670.4 h]; Cost |  |  | I08PA22005C0 |  |  | IC | C | R8 | PA | ME | 220 | 05 | 1S | BILL 8 | B08 | S2 | 1F | R00 | ACF04 | MEP | 220 | M1F |  |  |  |  |  |
| IR8PA22011C0 |  | IC-R8 ; 2nd Fix, Drainage/Water pipe (wall) (Public Area) | 48d | 2011-10-15 | 2011-12-14 | IR8PA09201C0 |  |  |  |  | 73.25d | 0d | PLUMBING [630 h]; Cost |  |  | I08PA22011C0 |  |  | IC | C | R8 | PA | ME | 220 | 11 | 2n | BILL 8 | B08 | S2 | 2F | R00 | ACF07 | MEP | 220 |  |  |  |  |  |  |
| IR8PA26009C0 |  | IC-R8 ; 2nd Fix, Inst of Wall conduites (Public Area) | 48d | 2011-10-15 | 2011-12-14 | IR8PA09201C0 |  |  |  |  | 73.25d | 0d | ELECTRICAL [397.2 h]; Cost |  |  | I08PA26009C0 |  |  | IC | C | R8 | PA | ME | 260 | 09 | 2n | BILL 8 | B08 | S2 | 2F | R00 | ACF07 | MEP | 260 |  |  |  |  |  |  |
| IR8PA40302C0 |  | IC-R8 ; 2nd Fix, Pneumatic tube (Public Area) | 48d | 2011-10-15 | 2011-12-14 | IR8PA09201C0 |  |  |  |  | 73.25d | 0d | MECHANICAL [2031.6 h]; Cost |  |  | C03E140302C0 |  |  | IC | C | R8 | PA | ME | 403 | 02 | 2n | BILL 8 | B08 | S2 | 2F | R00 | ACF07 | MEP | 403 |  |  |  |  |  |  |
| IR8PA23017C0 |  | IC-R8 ; 1st Fix, Inst of CHW pipe (Public Area) | 48d | 2011-10-22 | 2011-12-22 | IR8PA21111C0 SS+14d, IR8PA23001C0 |  |  |  |  | 64.95d | 0d | MECHANICAL [2832 h]; Cost |  |  | I08PA23017C0 |  |  | IC | C | R8 | PA | ME | 230 | 17 | 1S | BILL 8 | B08 | S2 | 1F | R00 | ACF04 | MEP | 230 | M1F |  |  |  |  |  |
| IR8PA08103C0 |  | IC-R8 ; Door Frames (Public Area) | 18d | 2011-11-01 | 2011-11-24 | IR8PA09201C0, GNHE08101C0 FS+69d |  |  |  |  | 124.25d | 69d | ASSORTED DOORS [5 h]; Cost |  |  | I08PA08103C0 |  |  | IC | C | R8 | PA | DO | 081 | 03 |  | BILL 8 | B08 | S2 | DF | R00 | ACF06 |  | 081 |  | 316 | 947 | 08 |  |  |
| IR8PA23023C0 |  | IC-R8 ; 1st Fix, Inst of Main Ducting (Public Area) | 48d | 2011-11-10 | 2012-01-09 | IR8PA23001C0, IR8PA23017C0 SS+14d |  |  |  |  | 64.95d | 0d | MECHANICAL [7574.4 h]; Cost |  |  | I08PA23023C0 |  |  | IC | C | R8 | PA | ME | 230 | 23 | 1S | BILL 8 | B08 | S2 | 1F | R00 | ACF04 | MEP | 230 | M1F |  |  |  |  |  |
| IR8PA27001C0 |  | IC-R8 ; 1st Fix, Wiring/ Cabling work (Public Area) | 48d | 2011-11-24 | 2012-01-23 | IR8PA26001C0, IR8PA26013C0, IR8PA27010C0 |  |  |  |  | 100.55d | 45.3d | ELECTRICAL [213.6 h]; Cost |  |  | I08PA27001C0 |  |  | IC | C | R8 | PA | ME | 270 | 01 | 1S | BILL 8 | B08 | S2 | 1F | R00 | ACF04 | MEP | 270 | M1F |  |  |  |  |  |
| IR8PA09203C0 |  | IC-R8 ; Partitions early wall & 1st face (Public Area) | 33d | 2011-11-27 | 2012-01-05 | IAFAF26039C0 FF, IAFAF26041C0 FF, IAFAF26045C0 FF, IR8PA09201C0 |  |  |  |  | 55.25d | 0d | PARTITIONS [65 m]; PARTITIONS [64 h]; Cost |  |  | I08PA09203C0 |  |  | IC | C | R8 | PA | PT | 092 | 03 |  | BILL 8 | B08 | S2 | 2F | R00 | ACF06 | GP | 092 | P1F | 314 | 945 |  |  |  |
| IR8PA01005C0 |  | IC-R8 ; 2nd, Wall Inspection by Consultant (Public Area) | 0d | 2011-12-15 | 2011-12-15 | IR8PA22011C0, IR8PA26009C0, IR8PA40302C0 |  |  |  |  | 73.25d | 18d | Cost |  |  | I08PA01005C0 |  |  | IC | C | R8 | PA | ME | 010 | 05 | 2n | BILL 8 | B08 | S2 | WI | R00 | ACF07 | MEP | 010 |  |  |  |  |  |  |
| IR8PA23009C0 |  | IC-R8 ; 2nd Fix, Inst of VAV'S CHW connection (Public Area) | 48d | 2011-12-22 | 2012-02-19 | IR8PA23017C0 |  |  |  |  | 78.95d | 23.7d | MECHANICAL [901.2 h]; Cost |  |  | I08PA23009C0 |  |  | IC | C | R8 | PA | ME | 230 | 09 | 2n | BILL 8 | B08 | S2 | 2F | R00 | ACF07 | MEP | 230 |  |  |  |  |  |  |
| IR8PA09205C0 |  | IC-R8 ; Partitions Closing (Public Area) | 36d | 2012-01-07 | 2012-02-18 | IR8PA01005C0, IR8PA09203C0, IR8PA22005C0, IR8PA22019C0, IR8PA08103C0 FF |  |  |  |  | 55.25d | 0d | PARTITIONS [65 m]; PARTITIONS [90 h]; Cost |  |  | I08PA09205C0 |  |  | IC | C | R8 | PA | PT | 092 | 05 |  | BILL 8 | B08 | S2 | FF | R00 | ACF06 | GP | 092 | P2F | 315 | 946 |  |  |  |
| IR8PA23008C0 |  | IC-R8 ; 1st Fix, Inst of VCD's/FD's (Public Area) | 48d | 2012-01-09 | 2012-03-06 | IR8PA23023C0 |  |  |  |  | 64.95d | 9.7d | MECHANICAL [910.8 h]; Cost |  |  | I08PA23008C0 |  |  | IC | C | R8 | PA | ME | 230 | 08 | 1S | BILL 8 | B08 | S2 | 1F | R00 | ACF04 | MEP | 230 | M1F |  |  |  |  |  |
| IR8PA23015C0 |  | IC-R8 ; 2nd Fix, Insulation of CHW pipe & Duct (Public Area) | 36d | 2012-01-09 | 2012-02-21 | IR8PA23017C0, IR8PA23023C0 |  |  |  |  | 76.95d | 21.7d | MECHANICAL [3075.6 h]; Cost |  |  | I08PA23015C0 |  |  | IC | C | R8 | PA | ME | 230 | 15 | 2n | BILL 8 | B08 | S2 | 2F | R00 | ACF07 | MEP | 230 |  |  |  |  |  |  |
| IR8PA09901C0 |  | IC-R8 ; Wall Prime & 1st coat (Public Area) | 24d | 2012-02-19 | 2012-03-17 | IR8PA09205C0 |  |  |  |  | 55.25d | 0d | WALL PAINT [23 h]; WALL PAINT [28 m2]; Cost |  |  | I08PA09901C0 |  |  | IC | C | R8 | PA | PA | 099 | 01 |  | BILL 8 | B08 | S2 | 01 | R00 | ACF06 |  | 099 |  | 328 | 956 |  |  |  |
| IR8PA26005C0 |  | IC-R8 ; 2nd Fix, Wiring for Power/Lighting/Emergency (Public Area) | 48d | 2012-02-19 | 2012-04-14 | IR8PA09205C0 |  |  |  |  | 127.25d | 0d | ELECTRICAL [213.6 h]; Cost |  |  | I08PA26005C0 |  |  | IC | C | R8 | PA | ME | 260 | 05 | 2n | BILL 8 | B08 | S2 | 2F | R00 | ACF07 | MEP | 260 |  |  |  |  |  |  |
| IR8PA26007C0 |  | IC-R8 ; 2nd Fix, Cable Pulling (Public Area) | 48d | 2012-02-19 | 2012-04-14 | IR8PA09201C0 SS+6d, IR8PA09205C0 |  |  |  |  | 163.25d | 121d | ELECTRICAL [2858.4 h]; Cost |  |  | I08PA26007C0 |  |  | IC | C | R8 | PA | ME | 260 | 07 | 2n | BILL 8 | B08 | S2 | 2F | R00 | ACF07 | MEP | 260 |  |  |  |  |  |  |
| IR8PA26053C0 |  | IC-R8 ; 2nd Fix, Wiring / Cabling (Public Area) | 48d | 2012-02-19 | 2012-04-14 | IR8PA09203C0, IR8PA09205C0 |  |  |  |  | 67.25d | 12d | ELECTRICAL [213.6 h]; Cost |  |  | I08PA26053C0 |  |  | IC | C | R8 | PA | ME | 260 | 53 | 2n | BILL 8 | B08 | S2 | 2F | R00 | ACF07 | MEP | 260 |  | 389 | 977 |  |  |  |
| IR8PA05501C0 |  | IC-R8 ; Handrails & balustrade (Public Area) | 34d | 2012-03-18 | 2012-04-25 | IR8PA09901C0, IAFT805509C0 |  |  |  |  | 117.25d | 2d | SECONDARY STEEL [0.5 h]; Cost |  |  | I08PA05501C0 |  |  | IC | C | R8 | PA | SW | 055 | 01 |  | BILL 8 | B08 | S2 | 01 | R00 | ACF03 |  | a |  |  |  |  |  |  |
| IR8PA09501C0 |  | IC-R8 ; Ceiling Grid and Service Tile (Public Area) | 36d | 2012-03-18 | 2012-04-28 | IR8PA09205C0, IR8PA21117C0, IR8PA23008C0, IR8PA23009C0, IR8PA23015C0, IR8PA27001C0, IR8PA26053C0 FF, IR8PA09901C0 |  |  |  |  | 55.25d | 0d | CEILING GRID FOR GYPSUM [2172.02 h]; CEILING GRID FOR GYPSUM [186.04 m2]; Cost |  |  | I08PA09501C0 |  |  | IC | C | R8 | PA | CE | 095 | 01 |  | BILL 8 | B08 | S2 | 01 | R00 | ACF06 |  | 095 |  | 323 | 952 |  |  |  |
| IR8PA26015C0 |  | IC-R8 ; Final Fix, Termination & Gladding of Cables (Public Area) | 36d | 2012-04-15 | 2012-05-26 | IR8PA26005C0 |  |  |  |  | 127.25d | 66d | ELECTRICAL [158.4 h]; Cost |  |  | I08PA26015C0 |  |  | IC | C | R8 | PA | ME | 260 | 15 | FF | BILL 8 | B08 | S2 | FF | R00 | ACF07 | MEP | 260 |  |  |  |  |  |  |
| IR8PA08107C0 |  | IC-R8 ; Doors (Public Area) | 16.75d | 2012-04-29 | 2012-05-17 | IR8PA08103C0, IR8PA09501C0, IR8PA09601C0, IR8PA09901C0 |  |  |  |  | 174.5d | 0d | ASSORTED DOORS [20 h]; ASSORTED DOORS [2 no]; Cost |  |  | I08PA08107C0 |  |  | IC | C | R8 | PA | DO | 081 | 07 |  | BILL 8 | B08 | S2 | DR | R00 | ACF06 |  | 081 |  | 317 | 948 | 08 |  |  |
| IR8PA09601C0 |  | IC-R8 ; Floor Finishes (Public Area) | 0d | 2012-04-29 | 2012-04-29 | IR8PA09205C0, IR8PA09501C0, IR8PA05501C0 FF |  |  |  |  | 115.25d | 0d | Cost |  |  | I08PA09601C0 |  |  | IC | C | R8 | PA | FF | 096 | 01 |  | BILL 8 | B08 | S2 | 01 | R00 | ACF06 |  | FF |  | 326 | 955 |  | RENAME |  |
| IR8PA09903C0 |  | IC-R8 ; Wall Final Paint (Public Area) | 24d | 2012-04-29 | 2012-05-26 | IR8PA09901C0, IR8PA09905C0 |  |  |  |  | 177d | 109d | WALL PAINT [13 h]; WALL PAINT [15 m2]; Cost |  |  | I08PA09903C0 |  |  | IC | C | R8 | PA | PA | 099 | 03 |  | BILL 8 | B08 | S2 | 02 | R00 | ACF06 |  | 099 |  | 329 | 957 |  |  |  |
| IR8PA09905C0 |  | IC-R8 ; Ceiling Prime & 1st coat (Public Area) | 0d | 2012-04-29 | 2012-04-29 | IR8PA09501C0 |  |  |  |  | 177d | 0d | Cost |  |  | I08PA09905C0 |  |  | IC | C | R8 | PA | PA | 099 | 05 |  | BILL 8 | B08 | S2 | 01 | R00 | ACF06 |  | 099 |  | 330 | 958 |  |  |  |
| IR8PA21115C0 |  | IC-R8 ; 2nd Fix, Inst of Sprinkler droppers (Public Area) | 48d | 2012-04-29 | 2012-06-24 | IR8PA09501C0 |  |  |  |  | 67.25d | 0d | MECHANICAL [800.4 h]; Cost |  |  | I08PA21115C0 |  |  | IC | C | R8 | PA | ME | 211 | 15 | 2n | BILL 8 | B08 | S2 | 2F | R00 | ACF07 | MEP | 211 |  |  |  |  |  |  |
| IR8PA23021C0 |  | IC-R8 ; 2nd Fix, Inst of Flexible Duct & Plenum boxes (Public Area) | 48d | 2012-04-29 | 2012-06-24 | IR8PA09205C0, IR8PA09501C0 |  |  |  |  | 67.25d | 0d | MECHANICAL [72 h]; Cost |  |  | I08PA23021C0 |  |  | IC | C | R8 | PA | ME | 230 | 21 | 2n | BILL 8 | B08 | S2 | 2F | R00 | ACF07 | MEP | 230 |  |  |  |  |  |  |
| IR8PA26017C0 |  | IC-R8 ; Final Fix, Inst of Ceiling rose (Public Area) | 36d | 2012-04-29 | 2012-06-09 | IR8PA09501C0 |  |  |  |  | 61.25d | 0d | ELECTRICAL [33.6 h]; Cost |  |  | I08PA26017C0 |  |  | IC | C | R8 | PA | ME | 260 | 17 | FF | BILL 8 | B08 | S2 | FF | R00 | ACF07 | MEP | 260 |  |  |  |  |  |  |
| IR8PA27002C0 |  | IC-R8 ; 2nd Fix, Wiring Droppers (Public Area) | 36d | 2012-04-29 | 2012-06-09 | IR8PA09501C0 |  |  |  |  | 79.25d | 0d | ELECTRICAL [213.6 h]; Cost |  |  | I08PA27002C0 |  |  | IC | C | R8 | PA | ME | 270 | 02 | 2n | BILL 8 | B08 | S2 | 2F | R00 | ACF07 | MEP | 270 |  |  |  |  |  |  |
| IR8PA27020C0 |  | IC-R8 ; 2nd Fix, Inst of ELV Equipment (Panels) (Public Area) | 60d | 2012-04-29 | 2012-07-08 | IR8PA09205C0, IR8PA09501C0 |  |  |  |  | 55.25d | 13d | ELECTRICAL [1041.6 h]; Cost |  |  | I08PA27020C0 |  |  | IC | C | R8 | PA | ME | 270 | 20 | 2n | BILL 8 | B08 | S2 | 2F | R00 | ACF04 | MEP | 270 |  |  |  |  |  | E |
| IR8PA40303C0 |  | IC-R8 ; Final Fix, Pneumatic Station (Public Area) | 48d | 2012-04-29 | 2012-06-24 | IR8PA09501C0 |  |  |  |  | 103.25d | 42d | MECHANICAL [2031.6 h]; Cost |  |  | C03E140303C0 |  |  | IC | C | R8 | PA | ME | 403 | 03 | FF | BILL 8 | B08 | S2 | FF | R00 | ACF07 | MEP | 403 |  |  |  |  |  |  |
| IR8PA26011C0 |  | IC-R8 ; 2nd Fix, Inst of Equipment (DB) (Public Area) | 66d | 2012-05-07 | 2012-07-23 | IR8PA09205C0, I08SL26011C0 SS+3d |  |  |  |  | 42.25d | 0d | ELECTRICAL [1736.4 h]; Cost |  |  | I08PA26011C0 |  |  | IC | C | R8 | PA | ME | 260 | 11 | 2n | BILL 8 | B08 | S2 | 2F | R00 | ACF04 | MEP | 260 |  |  |  |  |  | E |
| IR8PA08709C0 |  | IC-R8 ; Ironmongery (Public Area) | 9.75d | 2012-05-17 | 2012-05-29 | IR8PA08107C0 |  |  |  |  | 174.5d | 132.25d | IRONMONGERY [10 h]; IRONMONGERY [1 no]; Cost |  |  | I08PA08709C0 |  |  | IC | C | R8 | PA | DO | 087 | 09 |  | BILL 8 | B08 | S2 | IM | R00 | ACF06 |  | 087 |  | 322 | 951 | 08 |  |  |
| IR8PA26003C0 |  | IC-R8 ; Final Fix, Inst of Light fittings (Public Area) | 54d | 2012-06-10 | 2012-08-12 | IR8PA09501C0, IR8PA26017C0 |  |  |  |  | 61.25d | 0d | ELECTRICAL [9577.2 h]; Cost |  |  | I08PA26003C0 |  |  | IC | C | R8 | PA | ME | 260 | 03 | FF | BILL 8 | B08 | S2 | FF | R00 | ACF07 | MEP | 260 |  |  |  |  |  |  |
| IR8PA27030C0 |  | IC-R8 ; Final Fix, Inst of ELV device (Detector/Speaker) (Public Area) | 36d | 2012-06-10 | 2012-07-22 | IR8PA09501C0, IR8PA27002C0 |  |  |  |  | 79.25d | 18d | ELECTRICAL [1707.6 h]; Cost |  |  | I08PA27030C0 |  |  | IC | C | R8 | PA | ME | 270 | 30 | FF | BILL 8 | B08 | S2 | FF | R00 | ACF07 | MEP | 270 |  |  |  |  |  |  |
| IR8PA21113C0 |  | IC-R8 ; Final Fix, Inst of Sprinklers head/ Extinguisher (Public Area) | 36d | 2012-06-25 | 2012-08-05 | IR8PA09501C0, IR8PA21115C0 |  |  |  |  | 67.25d | 6d | MECHANICAL [152.4 h]; Cost |  |  | I08PA21113C0 |  |  | IC | C | R8 | PA | ME | 211 | 13 | FF | BILL 8 | B08 | S2 | FF | R00 | ACF07 | MEP | 211 |  |  |  |  |  |  |
| IR8PA23019C0 |  | IC-R8 ; Final Fix, Inst of Grilles & Diffusers (Public Area) | 36d | 2012-06-25 | 2012-08-05 | IR8PA09501C0, IR8PA23021C0 |  |  |  |  | 67.25d | 6d | MECHANICAL [757.2 h]; Cost |  |  | I08PA23019C0 |  |  | IC | C | R8 | PA | ME | 230 | 19 | FF | BILL 8 | B08 | S2 | FF | R00 | ACF07 | MEP | 230 |  |  |  |  |  |  |
| IR8PA09701C0 |  | IC-R8 ; Wall finishes (ST, WD, WC) (Public Area) | 36d | 2012-07-24 | 2012-09-05 | IR8PA26011C0, IR8PA27020C0, IR8PA09601C0 |  |  |  |  | 42.25d | 0d | ASSORTED WALL FINISH [287 h]; ASSORTED WALL FINISH [330 m2]; Cost |  |  | I08PA09701C0 |  |  | IC | C | R8 | PA | WF | 097 | 01 |  | BILL 8 | B08 | S2 | 01 | R00 | ACF06 |  | 097 |  | 105 | 1002 |  |  |  |
| IR8PA01006C0 |  | IC-R8 ; 2nd, Ceiling Inspection by Consultants (Public Area) | 0d | 2012-08-13 | 2012-08-13 | IR8PA21115C0, IR8PA23009C0, IR8PA23015C0, IR8PA27002C0, IR8PA09501C0, IR8PA21113C0, IR8PA23019C0, IR8PA26003C0, IR8PA26017C0, IR8PA27030C0, IR8PA40303C0, IR8PA26015C0 |  |  |  |  | 61.25d | 19d | Cost |  |  | I08PA01006C0 |  |  | IC | C | R8 | PA | ME | 010 | 06 | 2n | BILL 8 | B08 | S2 | CI | R00 | ACF07 | MEP | 010 |  |  |  |  |  |  |
| IR8PA09503C0 |  | IC-R8 ; Ceiling closure - ACT/Gypsum (Public Area) | 19.75d | 2012-09-06 | 2012-09-29 | IR8PA01006C0, IR8PA21115C0, IR8PA26005C0, IR8PA27001C0, IR8PA27002C0, IR8PA09701C0, IR8PA23021C0, IR8PA26007C0 |  |  |  |  | 42.25d | 0d | ASSORTED CEILING FINISH [446.49 h]; CEILING GYPSUM [61.09 h]; ASSORTED CEILING FINISH [726 m2]; CEILING GYPSUM [186 m2]; Cost |  |  | I08PA09503C0 |  |  | IC | C | R8 | PA | CE | 095 | 03 |  | BILL 8 | B08 | S2 | 02 | R00 | ACF06 |  | 095 |  | 324 | 953 |  |  |  |
| IR8PA11001C0 |  | IC-R8 ; Wall Protection (WP, CG, WG, FCG) (Public Area) | 24d | 2012-09-06 | 2012-10-03 | IR8PA09701C0, IR8PA09903C0 SS |  |  |  |  | 68d | 25.75d | FF&E [2 h]; Cost |  |  | I08PA11001C0 |  |  | IC | C | R8 | PA | WF | 110 | 01 |  | BILL 8 | B08 | S2 | 03 | R00 | ACF08 |  | b |  | 326 | 1001 |  |  |  |
| IR8PA11009C0 |  | IC-R8 ; Signage (Public Area) | 14d | 2012-09-06 | 2012-09-22 | IR8PA09701C0 |  |  |  |  | 78d | 35.75d | SIGNAGES [33 h]; SIGNAGES [32.56 no]; Cost |  |  | I08PA11009C0 |  |  | IC | C | R8 | PA | SA | 110 | 09 |  | BILL 8 | B08 | S2 | 09 | R00 | ACF08 |  | c |  | 322 | 951 | 08 |  |  |
| IR8PA09907C0 |  | IC-R8 ; Ceiling Final paint (Public Area) | 0d | 2012-09-29 | 2012-09-29 | IR8PA09601C0, IR8PA09905C0, IR8PA09503C0 |  |  |  |  | 72.25d | 30d | Cost |  |  | I08PA09907C0 |  |  | IC | C | R8 | PA | PA | 099 | 07 |  | BILL 8 | B08 | S2 | 02 | R00 | ACF06 |  | 099 |  | 331 | 959 |  |  |  |
| IR8PA26019C0 |  | IC-R8 ; Final Fix, Inst of Switch/Sockets (Public Area) | 18d | 2012-09-29 | 2012-10-20 | IR8PA09901C0, IR8PA09503C0 |  |  |  |  | 42.25d | 0d | ELECTRICAL [164.4 h]; Cost |  |  | I08PA26019C0 |  |  | IC | C | R8 | PA | ME | 260 | 19 | FF | BILL 8 | B08 | S2 | FF | R00 | ACF07 | MEP | 260 |  |  |  |  |  |  |

| ID | WBS | Activity | Duration | Start | Finish | Predecessors | Complete | Remaining | Planned start | Planned finish | Total float | Free float | Resources | Cost | Actual cost | change id | CCAD BUILDING(SET) | CCAD PHASE(SET) | CCAD FLOOR(SET) | CCAD ZONE(SET) | CCAD WORK(SET) | CCAD SECTION(SET) | CCAD SERIAL No.(SET) | CCAD CBS(SET) | CCAD BILL(SET) | CCAD HANDOVER(SET) | CCAD TAG(SET) | CCAD REV(SET) | CCADACF (SET) | CCAD SSCF | N_% | CCAD SUB ZONE MEP(SET) | CCAD CSA | Act Selector % | U% | CCAD MEQ | Change Order # | NEW ACTIVITY ID | CCAD DIVISION(SET) |
| --- | --- | --- | --- | --- | --- | --- | --- | --- | --- | --- | --- | --- | --- | --- | --- | --- | --- | --- | --- | --- | --- | --- | --- | --- | --- | --- | --- | --- | --- | --- | --- | --- | --- | --- | --- | --- | --- | --- | --- |
|  | 10 | **Precommissioning Tesing & snagging (Public Area)** |  | 2012-10-20 | 2012-11-27 |  |  |  |  |  |  |  |  |  |  |  |  |  |  |  |  |  |  |  |  |  |  |  |  |  |  |  |  |  |  |  |  |  |  |
| IR8TS01801C0 |  | IC-R8 ; MEP de-snag, FIREM sign-off | 12d | 2012-10-20 | 2012-11-05 | IR8PA26015C0, IR8PA21113C0, IR8PA23019C0, IR8PA26017C0, IR8PA26003C0, IR8PA27030C0, IR8PA40303C0, IR8PA26019C0 |  |  |  |  | 42.25d | 0d | TESTING & COMMISSIONING [1530 h]; Cost |  |  | IR8TS01801C0 | IC | C | R8 | TS | SC | 018 | 01 | BILL 8 | B08 | S2 | 01 | R00 | ACF07 | 018 |  |  |  |  |  |  |  |  |  |
| IR8TS01802C0 |  | IC-R8 ; Touch-up & Clean / JV inspection /CIR /De-snag | 18d | 2012-11-05 | 2012-11-27 | IR8CO04402C0, IR8CO04403C0, IR8CO04405C0, IR8CO04406C0, IR8CO04407C0, IR8CO04407C10, IR8CO04408C0, IR8CO04409C0, IR8CO04409C10, IR8CO04411C0, IR8PA05501C0, IR8PA08103C0, IR8PA08107C0, IR8PA08709C0, IR8PA09201C0, IR8PA09203C0, IR8PA09205C0, IR8PA09501C0, IR8PA09503C0, IR8PA09601C0, IR8PA09701C0, IR8PA09901C0, IR8PA09903C0, IR8PA09905C0, IR8PA09907C0, IR8PA11001C0, IR8PA11009C0, IR8PA21113C0, IR8PA23019C0, IR8PA26003C0, IR8PA26015C0, IR8PA26017C0, IR8PA26019C0, IR8PA27030C0, IR8PA40303C0, IR8TS01801C0, IR8CO04412C0, IR8CO04413C0 |  |  |  |  | 42.25d | 0d | TESTING & COMMISSIONING [255 h]; Cost |  |  | IR8TS01802C0 | IC | C | R8 | TS | SC | 018 | 02 | BILL 8 | B08 | S2 | 02 | R00 | ACF07 | 018 |  |  |  |  |  |  |  |  |  |
| IR8TS01805C0 |  | IC-R8 ; Consultant's final de-snag inspection | 0d | 2012-11-27 | 2012-11-27 | IR8TS01802C0 |  |  |  |  | 42.25d | 21.25d | Cost |  |  | IR8TS01803C0 | IC | C | R8 | TS | SC | 018 | 03 | BILL 8 | B08 | S2 | 03 | R00 | ACF07 | 018 |  |  |  |  |  |  |  |  |  |
|  | 03 | **Mech-1** |  | 2011-09-05 | 2012-10-15 |  |  |  |  |  |  |  |  |  |  |  |  |  |  |  |  |  |  |  |  |  |  |  |  |  |  |  |  |  |  |  |  |  |  |
| IR8M121111C0 |  | IC-R8 ; 1st Fix, Inst of Sprinkler main pipe (Mech RM) | 48d | 2011-09-05 A | 2011-11-24 | IR8M122006C0 SS+14d, IR8M123001C0 | 50% | 24d | 2011-12-10 | 2012-02-05 | 160.95d | 0d | MECHANICAL [264 h]; Cost [14398.4 AED] | 14,398.38 | 7,199.19 | I05ME21111C0 | IC | C | R8 | M1 | ME | 211 | 11 | BILL 8 | B08 | S2 | 1F | R00 | ACF04 | 211 | 20 | 1S | MEP | M1F |  |  |  |  |  |
| IR8M121119C0 |  | IC-R8 ; 1st Fix, Inst of Sprinkler branch pipe (Mech RM) | 48d | 2011-09-05 A | 2011-12-25 | IR8M121111C0 | 50% | 24d | 2012-02-06 | 2012-04-01 | 214.95d | 28.14d | MECHANICAL [609.6 h]; Cost [33303.7 AED] | 33,303.68 | 16,651.84 | I05ME21119C0 | IC | C | R8 | M1 | ME | 211 | 19 | BILL 8 | B08 | S2 | 1F | R00 | ACF04 | 211 | 20 | 1S | MEP | M1F |  |  |  |  |  |
| IR8M122011C0 |  | IC-R8 ; 1st Fix, Inst of Drainage pipe (Mech RM) | 48d | 2011-09-05 A | 2011-11-19 | IR8M123001C0, IR8M126001C0 SS+14d | 30% | 33.6d | 2011-11-09 | 2012-01-07 | 102.45d | 0d | PLUMBING [630 h]; Cost [34080.3 AED] | 34,080.3 | 10,224.09 | I05ME22011C0 | IC | C | R8 | M1 | ME | 220 | 11 | BILL 8 | B08 | S2 | 1F | R00 | ACF04 | 220 | 30 | 1S | MEP | M1F |  |  |  |  |  |
| IR8M123001C0 |  | IC-R8 ; 1st Fix, Inst. of Supports for MEP (Mech RM) | 42d | 2011-09-05 A | 2011-10-08 | IR8S107807C0, IR8S207807C0 | 85% | 6.3d | 2011-09-01 | 2011-10-19 | 102.45d | 0d | MECHANICAL [577.2 h]; Cost [32540.2 AED] | 32,540.18 | 27,659.15 | I05ME23001C0 | IC | C | R8 | M1 | ME | 230 | 01 | BILL 8 | B08 | S2 | 1F | R00 | ACF04 | 230 | 20 | 1S | MEP | M1F | 85 |  |  |  |  |
| IR8M123013C0 |  | IC-R8 ; 2nd Fix, Inst of Equipment (AHU) (Mech RM) | 72d | 2011-09-05 A | 2011-12-15 | IR8M122006C0 FF, IR8M122011C0 FF, IR8S107807C0, IR8S207807C0, I05M123013C0 SS | 25% | 54d | 2011-10-27 | 2012-01-25 | 102.45d | 0d | MECHANICAL [14275.2 h]; Cost [3248518 AED] | 3,248,518 | 812,129.5 | I05ME23013C0 | IC | C | R8 | M1 | ME | 230 | 13 | BILL 8 | B08 | S2 | 2F | R00 | ACF04 | 230 |  | 2n | MEP |  | 0 | H |  |  |  |
| IR8M126001C0 |  | IC-R8 ; 1st Fix, Inst of Trunking/Conduiting (Mech RM) | 48d | 2011-09-05 A | 2011-11-24 | IR8M123001C0 | 20% | 38.4d | 2011-10-20 | 2011-12-20 | 102.45d | 0d | ELECTRICAL [397.2 h]; Cost [20466.7 AED] | 20,466.68 | 4,093.34 | I05ME26001C0 | IC | C | R8 | M1 | ME | 260 | 01 | BILL 8 | B08 | S2 | 1F | R00 | ACF04 | 260 |  | 1S | MEP | M1F | 20 |  |  |  |  |
| IR8M126011C0 |  | IC-R8 ; 1st Fix, Inst of Cable Tray (Mech RM) | 48d | 2011-09-05 A | 2012-01-30 | IR8M123013C0 | 20% | 38.4d | 2012-01-26 | 2012-03-22 | 136.55d | 0d | ELECTRICAL [205.2 h]; Cost [11036 AED] | 11,035.96 | 2,207.19 | I05ME26011C0 | IC | C | R8 | M1 | ME | 260 | 11 | BILL 8 | B08 | S2 | 1F | R00 | ACF04 | 260 | 30 | 1S | MEP | M1F | 20 |  |  |  |  |
| IR8M127010C0 |  | IC-R8 ; 1st Fix, Inst of Trunking for ELV system (Mech RM) | 48d | 2011-09-05 A | 2012-02-14 | IR8M123005C0 | 20% | 38.4d | 2012-02-02 | 2012-03-29 | 124.55d | 0d | ELECTRICAL [914.4 h]; Cost [47960 AED] | 47,960.04 | 9,592.01 | I05ME27010C0 | IC | C | R8 | M1 | ME | 270 | 10 | BILL 8 | B08 | S2 | 1F | R00 | ACF04 | 270 |  | 1S | MEP | M1F | 20 |  |  |  |  |
| IR8M109201C0 |  | IC-R8 ; Metal Studs (Mech RM) | 20d | 2011-10-08 | 2011-10-31 | IR8M123001C0 |  |  |  |  | 121.93d | 0d | PARTITIONS [1963 h]; PARTITIONS - Metal Studs [1482 m]; Cost |  |  | I05ME09201C0 | IC | C | R8 | M1 | PT | 092 | 01 | BILL 8 | B08 | S2 | 1F | R00 | ACF06 | 092 |  |  | GP | PMS |  |  |  |  |  |
| IR8M122006C0 |  | IC-R8 ; 1st Fix, Inst of Water supply pipe (Mech RM) | 54d | 2011-10-08 | 2011-12-15 | IR8M122011C0 SS+10d, IR8M123001C0 |  |  |  |  | 102.45d | 0d | PLUMBING [1670.4 h]; Cost |  |  | I05ME22006C0 | IC | C | R8 | M1 | ME | 220 | 06 | BILL 8 | B08 | S2 | 1F | R00 | ACF04 | 220 |  | 1S | MEP | M1F |  |  |  |  |  |
| IR8M123005C0 |  | IC-R8 ; 1st Fix, Inst of Ducting (Mech RM) | 66d | 2011-10-08 | 2011-12-29 | IR8M123001C0, IR8M123013C0 SS+12d |  |  |  |  | 124.55d | 0d | MECHANICAL [7574.4 h]; Cost |  |  | I05ME23005C0 | IC | C | R8 | M1 | ME | 230 | 05 | BILL 8 | B08 | S2 | 1F | R00 | ACF04 | 230 |  | 1S | MEP | M1F |  |  |  |  |  |
| IR8M123019C0 |  | IC-R8 ; 1st Fix, Inst of CHW pipe (Mech RM) | 54d | 2011-10-24 | 2012-01-02 | IR8M121111C0 SS+12d, IR8M123001C0 |  |  |  |  | 160.95d | 0d | MECHANICAL [2832 h]; Cost |  |  | I05ME23019C0 | IC | C | R8 | M1 | ME | 230 | 19 | BILL 8 | B08 | S2 | 1F | R00 | ACF04 | 230 |  | 1S | MEP | M1F |  |  |  |  |  |
| IR8M109203C0 |  | IC-R8 ; Partitions 1st face (Mech RM) | 32.88d | 2011-10-31 | 2011-12-14 | IR8M109201C0 |  |  |  |  | 121.93d | 1.12d | PARTITIONS [1482 m]; PARTITIONS [1531 h]; Cost |  |  | I05ME09203C0 | IC | C | R8 | M1 | PT | 092 | 03 | BILL 8 | B08 | S2 | 2F | R00 | ACF06 | 092 |  |  | GP | P1F |  |  | 314 | 1463 |  |
| IR8M108101C0 |  | IC-R8 ; Metal Door Frames (Mech RM) | 24d | 2011-11-01 | 2011-12-04 | IR8M109201C0, GNHE08101C0 FS+69d |  |  |  |  | 166.25d | 45.44d | METAL DOORS [89 h]; Cost |  |  | I05ME08101C0 | IC | C | R8 | M1 | DO | 081 | 01 | BILL 8 | B08 | S2 | DF | R00 | ACF06 | 081 |  |  |  |  |  |  | 316 | 1465 | 08 |
| IR8M109205C0 |  | IC-R8 ; Partitions Closing (Mech RM) | 36.14d | 2011-12-15 | 2012-01-28 | IR8M109201C0, IR8M109203C0, IR8M122006C0, IR8M122011C0, IR8M108101C0 FF |  |  |  |  | 120.81d | 0d | PARTITIONS [1482 m]; PARTITIONS [1953 h]; Cost |  |  | I05ME09205C0 | IC | C | R8 | M1 | PT | 092 | 05 | BILL 8 | B08 | S2 | FF | R00 | ACF06 | 092 |  |  | GP | P2F |  |  | 315 | 1464 |  |
| IR8M126009C0 |  | IC-R8 ; 2nd Fix, Inst of Equipment (DB,SG) (Mech RM) | 66d | 2011-12-15 | 2012-03-04 | IR8M123013C0 |  |  |  |  | 156.95d | 80.22d | ELECTRICAL [3132 h]; Cost |  |  | I05ME26009C0 | IC | C | R8 | M1 | ME | 260 | 09 | BILL 8 | B08 | S2 | 2F | R00 | ACF04 | 260 |  | 2n | MEP |  |  | E |  |  |  |
| IR8M123015C0 |  | IC-R8 ; 2nd Fix, Inst of VCD's/FD's (Mech RM) | 48d | 2011-12-29 | 2012-02-26 | IR8M123005C0 |  |  |  |  | 162.95d | 8d | MECHANICAL [910.8 h]; Cost |  |  | I05ME23015C0 | IC | C | R8 | M1 | ME | 230 | 15 | BILL 8 | B08 | S2 | 2F | R00 | ACF07 | 230 |  | 2n | MEP |  |  |  |  |  |  |
| IR8M121117C0 |  | IC-R8 ; 2nd Fix, Inst of Zone Control Valve (Mech RM) | 48d | 2012-01-02 | 2012-02-28 | IR8M123013C0, IR8M123019C0 |  |  |  |  | 160.95d | 84.22d | MECHANICAL [379.2 h]; Cost |  |  | I05ME21117C0 | IC | C | R8 | M1 | ME | 211 | 17 | BILL 8 | B08 | S2 | 2F | R00 | ACF07 | 211 |  | 2n | MEP |  |  |  |  |  |  |
| IR8M123017C0 |  | IC-R8 ; 2nd Fix, Insulation of CHW pipe & Duct (Mech RM) | 54d | 2012-01-02 | 2012-03-06 | IR8M123005C0, IR8M123019C0 |  |  |  |  | 166.95d | 0d | MECHANICAL [3075.6 h]; Cost |  |  | I05ME23017C0 | IC | C | R8 | M1 | ME | 230 | 17 | BILL 8 | B08 | S2 | 2F | R00 | ACF07 | 230 |  | 2n | MEP |  |  |  |  |  |  |
| IR8M109601C0 |  | IC-R8 ; Floor Finishes (Mech RM) | 18d | 2012-01-28 | 2012-02-19 | IR8M109205C0 |  |  |  |  | 222.56d | 102.06d | ASSORTED FLOOR FINISH [896 h]; ASSORTED FLOOR FINISH [496 m2]; Cost |  |  | I05ME09601C0 | IC | C | R8 | M1 | FF | 096 | 01 | BILL 8 | B08 | S2 | 01 | R00 | ACF06 | FF |  |  |  |  |  |  | 326 | 1501 |  |
| IR8M121115C0 |  | IC-R8 ; 2nd Fix, Inst of Sprinkler droppers (Mech RM) | 48d | 2012-01-28 | 2012-03-25 | IR8M109205C0, IR8M121119C0 |  |  |  |  | 186.81d | 0d | MECHANICAL [800.4 h]; Cost |  |  | I05ME21115C0 | IC | C | R8 | M1 | ME | 211 | 15 | BILL 8 | B08 | S2 | 2F | R00 | ACF07 | 211 |  | 2n | MEP |  |  |  |  |  |  |
| IR8M121123C0 |  | IC-R8 ; Final Fix, Inst of Fire Extinguishers/FHC (Mech RM) | 48d | 2012-01-28 | 2012-03-25 | IR8M109205C0 |  |  |  |  | 222.81d | 146.08d | MECHANICAL [1893.6 h]; Cost |  |  | I05ME21123C0 | IC | C | R8 | M1 | ME | 211 | 23 | BILL 8 | B08 | S2 | FF | R00 | ACF07 | 211 |  | FF | MEP |  |  |  |  |  |  |
| IR8M126015C0 |  | IC-R8 ; Final Fix, Inst of Ceiling rose (Mech RM) | 36d | 2012-01-28 | 2012-03-11 | IR8M109205C0 |  |  |  |  | 234.81d | 158.08d | ELECTRICAL [33.6 h]; Cost |  |  | I05ME26015C0 | IC | C | R8 | M1 | ME | 260 | 15 | BILL 8 | B08 | S2 | FF | R00 | ACF07 | 260 |  | FF | MEP |  |  |  |  |  |  |
| IR8M127020C0 |  | IC-R8 ; 2nd Fix, Inst of ELV Equipment (Panels) (Mech RM) | 60d | 2012-01-28 | 2012-04-08 | IR8M123013C0, IR8M109205C0 |  |  |  |  | 126.81d | 50.08d | ELECTRICAL [1041.6 h]; Cost |  |  | I05ME27020C0 | IC | C | R8 | M1 | ME | 270 | 20 | BILL 8 | B08 | S2 | 2F | R00 | ACF04 | 270 |  | 2n | MEP |  |  | E |  |  |  |
| IR8M126007C0 |  | IC-R8 ; 2nd Fix, Cable Pulling (Mech RM) | 48d | 2012-01-30 | 2012-03-27 | IR8M126011C0 |  |  |  |  | 136.55d | 12d | ELECTRICAL [2858.4 h]; Cost |  |  | I05ME26007C0 | IC | C | R8 | M1 | ME | 260 | 07 | BILL 8 | B08 | S2 | 2F | R00 | ACF07 | 260 |  | 2n | MEP |  |  |  |  |  |  |
| IR8M127001C0 |  | IC-R8 ; 1st Fix, Wiring/ Cabling work (Mech RM) | 48d | 2012-02-14 | 2012-04-10 | IR8M126001C0, IR8M126011C0, IR8M127010C0 |  |  |  |  | 124.55d | 0d | ELECTRICAL [213.6 h]; Cost |  |  | I05ME27001C0 | IC | C | R8 | M1 | ME | 270 | 01 | BILL 8 | B08 | S2 | 1F | R00 | ACF04 | 270 |  | 1S | MEP | M1F |  |  |  |  |  |
| IR8M123023C0 |  | IC-R8 ; Final Fix, Inst of Flexible Duct & Plenum boxes (Mech RM) | 36d | 2012-03-06 | 2012-04-17 | IR8M123015C0, IR8M123017C0 |  |  |  |  | 166.95d | 0d | MECHANICAL [72 h]; Cost |  |  | I05ME23023C0 | IC | C | R8 | M1 | ME | 230 | 23 | BILL 8 | B08 | S2 | FF | R00 | ACF07 | 230 |  | FF | MEP |  |  |  |  |  |  |
| IR8M123011C0 |  | IC-R8 ; 2nd Fix, Inst of Equipment (FCU,FAN,PUMP) (Mech RM) | 66d | 2012-03-20 | 2012-06-05 | IR8M123013C0, I05M223011C0 SS+20d, IR8M109205C0 |  |  |  |  | 76.72d | 0d | MECHANICAL [1326 h]; Cost |  |  | I05ME23011C0 | IC | C | R8 | M1 | ME | 230 | 11 | BILL 8 | B08 | S2 | 2F | R00 | ACF04 | 230 |  | 2n | MEP |  |  | H |  |  |  |
| IR8M121121C0 |  | IC-R8 ; Final Fix, Inst of Sprinklers head (Mech RM) | 36d | 2012-03-25 | 2012-05-06 | IR8M121115C0 |  |  |  |  | 186.81d | 110.08d | MECHANICAL [152.4 h]; Cost |  |  | I05ME21121C0 | IC | C | R8 | M1 | ME | 211 | 21 | BILL 8 | B08 | S2 | FF | R00 | ACF07 | 211 |  | FF | MEP |  |  |  |  |  |  |
| IR8M126005C0 |  | IC-R8 ; 2nd Fix, Wiring for Power/Lighting/Emergency (Mech RM) | 48d | 2012-04-10 | 2012-06-05 | IR8M126001C0, IR8M126007C0, IR8M126011C0, IR8M127001C0, IR8M127010C0 |  |  |  |  | 124.55d | 0d | ELECTRICAL [213.6 h]; Cost |  |  | I05ME26005C0 | IC | C | R8 | M1 | ME | 260 | 05 | BILL 8 | B08 | S2 | 2F | R00 | ACF07 | 260 |  | 2n | MEP |  |  |  |  |  |  |
| IR8M123021C0 |  | IC-R8 ; Final Fix, Inst of Grilles & Diffusers (Mech RM) | 36d | 2012-04-17 | 2012-05-29 | IR8M123023C0 |  |  |  |  | 166.95d | 90.22d | MECHANICAL [757.2 h]; Cost |  |  | I05ME23021C0 | IC | C | R8 | M1 | ME | 230 | 21 | BILL 8 | B08 | S2 | FF | R00 | ACF07 | 230 |  | FF | MEP |  |  |  |  |  |  |
| IR8M109901C0 |  | IC-R8 ; Wall Prime & 1st coat (Mech RM) | 24d | 2012-05-20 | 2012-06-18 | IR8M109205C0, IR8CO04455C0 FS+7d |  |  |  |  | 108.75d | 0d | WALL PAINT [531 h]; WALL PAINT [662 m2]; Cost |  |  | I05ME09901C0 | IC | C | R8 | M1 | PA | 099 | 01 | BILL 8 | B08 | S2 | 01 | R00 | ACF06 | 099 |  |  |  |  |  |  | 328 | 1469 |  |
| IR8M123009C0 |  | IC-R8 ; 2nd Fix, Inst of VAV'S CHW connection (Mech RM) | 48d | 2012-06-05 | 2012-08-01 | IR8M123011C0 |  |  |  |  | 76.72d | 0d | MECHANICAL [901.2 h]; Cost |  |  | I05ME23009C0 | IC | C | R8 | M1 | ME | 230 | 09 | BILL 8 | B08 | S2 | 2F | R00 | ACF07 | 230 |  | 2n | MEP |  |  |  |  |  |  |
| IR8M127003C0 |  | IC-R8 ; Final Fix, BMS connection work to Equipment (Mech RM) | 48d | 2012-06-05 | 2012-08-01 | IR8M121117C0, IR8M123011C0, IR8M123013C0, IR8M123015C0, IR8M126009C0, IR8M127001C0, IR8M127020C0 |  |  |  |  | 76.72d | 0d | ELECTRICAL [15034.8 h]; Cost |  |  | I05ME27003C0 | IC | C | R8 | M1 | ME | 270 | 03 | BILL 8 | B08 | S2 | FF | R00 | ACF07 | 270 |  | FF | MEP |  |  |  |  |  |  |
| IR8M126013C0 |  | IC-R8 ; Final Fix, Termination & Gladding of Cables (Mech RM) | 36d | 2012-06-05 | 2012-07-18 | IR8M109205C0, IR8M126005C0 |  |  |  |  | 124.55d | 47.83d | ELECTRICAL [158.4 h]; Cost |  |  | I05ME26013C0 | IC | C | R8 | M1 | ME | 260 | 13 | BILL 8 | B08 | S2 | FF | R00 | ACF07 | 260 |  | FF | MEP |  |  |  |  |  |  |
| IR8M108105C0 |  | IC-R8 ; Metal Doors (Mech RM) | 20d | 2012-06-18 | 2012-07-11 | IR8M108101C0, IR8M109601C0, IR8M109901C0 |  |  |  |  | 120.5d | 0d | METAL DOORS [310 h]; METAL DOORS [31 no]; Cost |  |  | I05ME08105C0 | IC | C | R8 | M1 | DO | 081 | 05 | BILL 8 | B08 | S2 | DR | R00 | ACF06 | 081 |  |  |  |  |  |  | 317 | 1466 | 08 |
| IR8M109903C0 |  | IC-R8 ; Wall - Final Paint (Mech RM) | 24d | 2012-06-18 | 2012-07-16 | IR8M109901C0 |  |  |  |  | 108.75d | 0d | WALL PAINT [286 h]; WALL PAINT [356 m2]; Cost |  |  | I05ME09903C0 | IC | C | R8 | M1 | PA | 099 | 03 | BILL 8 | B08 | S2 | 02 | R00 | ACF06 | 099 |  |  |  |  |  |  | 329 | 1470 |  |
| IR8M126019C0 |  | IC-R8 ; Final Fix, Inst of Light fittings (Mech RM) | 36d | 2012-06-18 | 2012-07-30 | IR8M109901C0 |  |  |  |  | 114.75d | 38.02d | ELECTRICAL [9577.2 h]; Cost |  |  | I05ME26019C0 | IC | C | R8 | M1 | ME | 260 | 19 | BILL 8 | B08 | S2 | FF | R00 | ACF07 | 260 |  | FF | MEP |  |  |  |  |  |  |
| IR8M108709C0 |  | IC-R8 ; Ironmongery (Mech RM) | 20d | 2012-07-11 | 2012-08-04 | IR8M108105C0 |  |  |  |  | 120.5d | 43.77d | IRONMONGERY [220 h]; IRONMONGERY [22 no]; Cost |  |  | I05ME08709C0 | IC | C | R8 | M1 | DO | 087 | 09 | BILL 8 | B08 | S2 | IM | R00 | ACF06 | 087 |  |  |  |  |  |  | 322 | 1467 | 08 |
| IR8M122003C0 |  | IC-R8 ; Final Fix, Inst of All drain (Mech RM) | 18d | 2012-07-16 | 2012-08-06 | IR8M109601C0, IR8M109903C0 |  |  |  |  | 108.75d | 32.02d | PLUMBING [630 h]; Cost |  |  | I05ME22003C0 | IC | C | R8 | M1 | ME | 220 | 03 | BILL 8 | B08 | S2 | FF | R00 | ACF07 | 220 |  | FF | MEP |  |  |  |  |  |  |
| IR8M126017C0 |  | IC-R8 ; Final Fix, Inst of Switch/Sockets (Mech RM) | 12d | 2012-07-16 | 2012-07-30 | IR8M109901C0, IR8M109903C0 |  |  |  |  | 114.75d | 38.02d | ELECTRICAL [164.4 h]; Cost |  |  | I05ME26017C0 | IC | C | R8 | M1 | ME | 260 | 17 | BILL 8 | B08 | S2 | FF | R00 | ACF07 | 260 |  | FF | MEP |  |  |  |  |  |  |
| IR8M127030C0 |  | IC-R8 ; Final Fix, Inst of ELV device (Detector/Speaker) (Mech RM) | 36d | 2012-08-01 | 2012-09-15 | IR8M109901C0, IR8M123009C0, IR8M127020C0, IR8M127003C0, IZ9GZ26563R2 FF |  |  |  |  | 76.72d | 0d | ELECTRICAL [1707.6 h]; Cost |  |  | I05ME27030C0 | IC | C | R8 | M1 | ME | 270 | 30 | BILL 8 | B08 | S2 | FF | R00 | ACF07 | 270 |  | FF | MEP |  |  |  |  |  |  |

| ID | WBS | Activity | Duration | Start | Finish | Predecessors | Complete | Remaining | Planned start | Planned finish | Total float | Free float | Constraint | Resources | Cost | Actual cost | change id | CCAD BUILDING(SET) | CCAD PHASE(SET) | CCAD FLOOR(SET) | CCAD ZONE(SET) | CCAD WORK(SET) | CCAD SECTION(SET) | CCAD SERIAL No.(SET) | CCAD CBS(SET) | CCAD BILL(SET) | CCAD HANDOVER(SET) | CCAD TAG(SET) | CCAD REV(SET) | CCADACF (SET) | CCAD SSCF | Change Order # | NEW ACTIVITY ID | CCAD DIVISION(SET) | CCAD CSA | P_811 | P_711 | U% | July2011 Target% Complete | Claimed This Month | N_% | CCAD SUB ZONE MEP(SET) | user_number8 | user_integer1 | user_integer2 | user_number7 | FILTER |
| --- | --- | --- | --- | --- | --- | --- | --- | --- | --- | --- | --- | --- | --- | --- | --- | --- | --- | --- | --- | --- | --- | --- | --- | --- | --- | --- | --- | --- | --- | --- | --- | --- | --- | --- | --- | --- | --- | --- | --- | --- | --- | --- | --- | --- | --- | --- | --- |
|  | 10 | **Precommissioning Tesing & snagging (Mech-1)** |  | 2012-09-15 | 2012-10-15 |  |  |  |  |  |  |  |  |  |  |  |  |  |  |  |  |  |  |  |  |  |  |  |  |  |  |  |  |  |  |  |  |  |  |  |  |  |  |  |  |  |  |
| IR8TS01811C0 |  | IC-R8 ; MEP de-snag, FIREM sign-off | 9.75d | 2012-09-15 | 2012-09-26 | IR8M121123C0, IR8M126015C0, IR8M126017C0, IR8M126019C0, IR8M122003C0, IR8M123023C0, IR8M127030C0, IR8M121121C0, IR8M127003C0, IR8M123021C0, IR8M126013C0 |  |  |  |  | 76.72d | 0d |  | TESTING & COMMISSIONING [510 h]; Cost |  |  | IR8TS01801C0 | IC | C | R8 | TS | SC | 018 | 01 | BILL 8 | B08 | S2 | 01 | R00 | ACF07 | 018 |  |  |  |  |  |  |  |  |  |  |  |  |  |  |  |  |
| IR8TS01804C0 |  | IC-R8 ; Touch-up & Clean / JV inspection /CIR /De-snag | 16d | 2012-09-26 | 2012-10-15 | IR8CO04402C0, IR8CO04403C0, IR8CO04405C0, IR8CO04406C0, IR8CO04407C0, IR8CO04407C10, IR8CO04408C0, IR8CO04409C0, IR8CO04409C10, IR8CO04411C0, IR8M108101C0, IR8M108105C0, IR8M108709C0, IR8M109201C0, IR8M109203C0, IR8M109205C0, IR8M109601C0, IR8M109901C0, IR8M109903C0, IR8M121121C0, IR8M121123C0, IR8M122003C0, IR8M123021C0, IR8M123023C0, IR8M126013C0, IR8M126015C0, IR8M126017C0, IR8M126019C0, IR8M127003C0, IR8M127030C0, IR8TS01811C0, IR8CO04412C0, IR8CO04413C0 |  |  |  |  | 76.72d | 0d |  | TESTING & COMMISSIONING [128 h]; Cost |  |  | IR8TS01802C0 | IC | C | R8 | TS | SC | 018 | 02 | BILL 8 | B08 | S2 | 02 | R00 | ACF07 | 018 |  |  |  |  |  |  |  |  |  |  |  |  |  |  |  |  |
| IR8TS01806C0 |  | IC-R8 ; Consultant's final de-snag inspection | 0d | 2012-10-15 | 2012-10-15 | IR8TS01804C0 |  |  |  |  | 76.72d | 55.73d |  | Cost |  |  | IR8TS01803C0 | IC | C | R8 | TS | SC | 018 | 03 | BILL 8 | B08 | S2 | 03 | R00 | ACF07 | 018 |  |  |  |  |  |  |  |  |  |  |  |  |  |  |  |  |
|  | 04 | **Roof** |  | 2011-11-05 | 2011-12-21 |  |  |  |  |  |  |  |  |  |  |  |  |  |  |  |  |  |  |  |  |  |  |  |  |  |  |  |  |  |  |  |  |  |  |  |  |  |  |  |  |  |  |
| IR8RF07101C0 |  | IC-R8 ; Water Proofing Membrane (Roof) | 24d | 2011-11-05 | 2011-12-07 | IR8BM03301C0, IR8CO04405C0, IR8CO04406C0 |  |  |  |  | 381d | 0d |  | THERMAL & MOISTURE [864 h]; Cost |  |  | IR8RF07101C0 | IC | C | R8 | RF | FF | 071 | 01 | BILL 8 | B08 | S2 | 01 | R00 | ACF03 | 071 | 302 | 335 | 03 |  |  |  |  |  |  |  |  |  |  |  |  |  |
| IR8RF09601C0 |  | IC-R8 ; Paving / Surfacing (Roof) | 12d | 2011-12-08 | 2011-12-21 | IR8RF07101C0 |  |  |  |  | 381d | 0d |  | ASSORTED FLOOR FINISH [16 h]; Cost |  |  | IR8RF09601C0 | IC | C | R8 | RF | FF | 096 | 01 | BILL 8 | B08 | S2 | 08 | R00 | ACF09 | PV | 302 | 335 | 03 |  |  |  |  |  |  |  |  |  |  |  |  |  |
|  | 05 | **BMU** |  | 2011-07-10 | 2012-01-24 |  |  |  |  |  |  |  |  |  |  |  |  |  |  |  |  |  |  |  |  |  |  |  |  |  |  |  |  |  |  |  |  |  |  |  |  |  |  |  |  |  |  |
| IR8BM03301C0 |  | IC-R8 ; Concrete Plinth (BMU-A2) | 18d | 2011-07-10 A | 2011-07-31 A | IR8S103399C0, IR8S203399C0 | 100% |  | 2011-06-30 | 2011-07-20 |  |  |  | CONCRETE [96 h]; Cost |  |  | IR8BM03301C0 | IC | C | R8 | BM | CT | 033 | 01 | BILL 8 | B08 | S2 | 10 | R00 | ACF03 | 033 | 302 | 335 | 03 |  |  |  |  |  |  |  |  |  |  |  |  |  |
| I05BM033B2C0 |  | IC-05 ; Brackets Installation (BMU-B1) | 24d | 2011-08-02 A | 2011-10-02 | I05S105103C0, I05S205103C0 | 95% | 1.2d | 2011-06-30 | 2011-07-27 | 281.8d | 0d |  | Labor General [1 h]; Cost |  |  | T21BM03301C0 | IC | C | 05 | BM | BMU | 055 | 01 | BILL 10 | B08 | S2 | BMU | R00 | ACF03 | BMU | 302 | 335 | 03 | BMU |  |  |  |  |  |  |  |  |  |  |  |  |
| IR8BM05501C0 |  | IC-R8 ; Steel Tracking (BMU-A2) | 52d | 2011-08-02 A | 2011-09-29 A | IR8BM03301C0 | 100% |  | 2011-07-31 | 2011-10-01 |  |  |  | SECONDARY STEEL [5 h]; Cost |  |  | IR8BM05501C0 | IC | C | R8 | BM | BMU | 055 | 01 | BILL 8 | B08 | S2 | BMU | R00 | ACF03 | BMU | 302 | 335 | 03 | BMU | 30 | 0 |  |  |  |  |  |  |  |  |  |  |
| IR8BM11001C0 |  | IC-R8 ; BMU Machine (BMU-A2) | 29.98d | 2011-10-01 | 2011-11-03 | IR8BM05501C0 |  |  |  |  | 200.03d | 188.82d |  | FF&E [2350 h]; FF&E [783.19 no]; MECHANICAL [15940 h]; Cost |  |  | IR8BM11001C0 | IC | C | R8 | BM | BMU | 110 | 01 | BILL 8 | B08 | S2 | BMU | R00 |  | BMU | 302 | 335 | 03 | BMU |  |  |  |  |  |  |  |  |  |  |  |  |
| I05BM055B2C0 |  | IC-05 ; Steel Tracking (BMU-B1) | 56d | 2011-10-02 | 2011-12-12 | I05BM033B2C0, IR8S107807C0, IR8S207807C0, OGNMU00053S0 |  |  |  |  | 281.8d | 0d |  | Labor General [1 h]; Cost |  |  | T21BM05501C0 | IC | C | 05 | BM | BMU | 055 | 01 | BILL 10 | B08 | S2 | BMU | R00 | ACF03 | BMU | 302 | 335 | 03 | BMU |  |  |  |  |  |  |  |  |  |  |  |  |
| I05BM110B2C0 |  | IC-05 ; BMU Machine (BMU-B1) | 36d | 2011-12-12 | 2012-01-24 | I05BM055B2C0 |  |  |  |  | 281.8d | 0d |  | Labor General [1 h]; Cost |  |  | T21BM11001C0 | IC | C | 05 | BM | BMU | 110 | 01 | BILL 10 | B08 | S2 | BMU | R00 |  | BMU | 302 | 335 | 03 | BMU |  |  |  |  |  |  |  |  |  |  |  |  |
|  | 06 | **Solar Panel** |  | 2011-06-26 | 2012-02-05 |  |  |  |  |  |  |  |  |  |  |  |  |  |  |  |  |  |  |  |  |  |  |  |  |  |  |  |  |  |  |  |  |  |  |  |  |  |  |  |  |  |  |
| IR8SP03301C0 |  | IC-R8 ; Concrete Plinth (Solar Panel) | 18d | 2011-06-26 A | 2011-09-29 A | IR8S103399C0, IR8S203399C0 | 100% |  | 2011-06-30 | 2011-07-21 |  |  |  | CONCRETE [288 h]; Cost |  |  | IR8SP03301C0 | IC | C | R8 | SP | CT | 033 | 01 | BILL 8 | B08 | S2 | 10 | R00 | ACF03 | 033 | 302 | 335 | 03 |  | 80 | 70 |  |  |  |  |  |  |  |  |  |  |
| IR8SP05501C0 |  | IC-R8 ; Steel Frame (Solar Panel) | 36d | 2011-12-22 | 2012-02-02 | IR8RF09601C0, IR8RF09601C0 FF, IR8SP03301C0 |  |  |  |  | 381d | 0d |  | SECONDARY STEEL [5 h]; Cost |  |  | IR8SP05501C0 | IC | C | R8 | SP | SW | 055 | 01 | BILL 8 | B08 | S2 | 03 | R00 | ACF03 | 055 | 302 | 335 | 03 |  |  |  |  |  |  |  |  |  |  |  |  |  |
| IR8SP22001C0 |  | IC-R8 ; Plumbing Pipe (Solar Panel) | 0d | 2012-02-05 | 2012-02-05 | IR8SP05501C0 |  |  |  |  | 381d | 0d |  | Cost |  |  | IR8SP22001C0 | IC | C | R8 | SP | ME | 220 | 01 | BILL 8 | B08 | S2 | FF | R00 | ACF04 | 220 | 302 | 335 | 03 | MEP |  |  |  |  |  |  |  |  |  |  |  |  |
| IR8SP23001C0 |  | IC-R8 ; Solar Panel (Solar Panel) | 0d | 2012-02-05 | 2012-02-05 | IR8SP22001C0 |  |  |  |  | 381d | 378.12d |  | Cost |  |  | IR8SP23001C0 | IC | C | R8 | SP | ME | 230 | 01 | BILL 8 | B08 | S2 | FF | R00 | ACF07 | 230 | 302 | 335 | 03 | MEP |  |  |  |  |  |  |  |  |  |  |  |  |
|  | EX | **External** |  | 2011-08-08 | 2012-06-17 |  |  |  |  |  |  |  |  |  |  |  |  |  |  |  |  |  |  |  |  |  |  |  |  |  |  |  |  |  |  |  |  |  |  |  |  |  |  |  |  |  |  |
|  | 01 | **Structure & Envelopment** |  | 2011-08-08 | 2012-06-17 |  |  |  |  |  |  |  |  |  |  |  |  |  |  |  |  |  |  |  |  |  |  |  |  |  |  |  |  |  |  |  |  |  |  |  |  |  |  |  |  |  |  |
| IEXCO04403C0 |  | IC-EX ; Diamond Tube Steel (Common Zone) | 87d | 2011-08-08 A | 2012-01-28 | I06CO04409C0 | 10% | 78.3d | 2011-10-12 | 2012-01-29 | 18.7d | 0d |  | FACADE DIAMOND GLASS [25204.2 h]; Cost |  |  | IEXCO04403C0 | IC | C | EX | CO | FA | 044 | 03 | BILL 8 | B08 | S2 | FDG | R00 | ACF05 | 044 |  |  |  | FA | 10 | 0 | 10 |  |  |  |  |  |  |  |  |  |
| IEXCO04405C0 |  | IC-EX ; Diamond Glass (Common Zone) | 96d | 2012-02-25 | 2012-06-17 | IEXCO04403C0 FS+19d, I08CO04415C0 FF, I05CO04413C0 |  |  |  |  | 14.7d | 0d | start on or after 2012-02-25 | FACADE DIAMOND GLASS [14325.4 h]; FACADE DIAMOND GLASS [5236 m2]; FACADE TOTAL QUANTITY m2 [5236 m2]; Cost |  |  | IEXCO04405C0 | IC | C | EX | CO | FA | 044 | 05 | BILL 8 | B08 | S2 | FDG | R00 | ACF05 | 044 |  |  |  | FA |  |  |  |  |  |  |  |  |  |  |  |  |
|  | AF | **MEP Risers** |  | 2011-06-12 | 2012-02-12 |  |  |  |  |  |  |  |  |  |  |  |  |  |  |  |  |  |  |  |  |  |  |  |  |  |  |  |  |  |  |  |  |  |  |  |  |  |  |  |  |  |  |
|  | 02 | **MEP Risers** |  | 2011-06-12 | 2012-01-05 |  |  |  |  |  |  |  |  |  |  |  |  |  |  |  |  |  |  |  |  |  |  |  |  |  |  |  |  |  |  |  |  |  |  |  |  |  |  |  |  |  |  |
| IAFAF21103C0 |  | IC-AF ; Risers-Fire Suppression risers (All Floor) | 60d | 2011-06-12 A | 2011-10-06 | IAFAF21101C0 | 90% | 6d | 2011-07-04 | 2011-09-14 | 127.25d | 72d |  | MECHANICAL [7657.2 h]; Cost [395366 AED] | 395,366.28 | 355,829.65 | IAFAF21103C0 | IC | C | AF | AF | ME | 211 | 03 | BILL 11 | B08 | S2 | RI | R00 | ACF04 | 211 | 1121 | 1514 |  | MEP | 90 | 75 | 85 | 75 | 91724.45 | 75 | RI |  |  |  |  |  |
| IAFAF21101C0 |  | IC-AF ; Risers-Secondary Steel for fire Suppression (All Floor) | 18d | 2011-07-10 A | 2011-10-01 | DAFAF21101C0, IR8S105101C0, IR8S205101C0 | 100% | 0d | 2011-07-09 | 2011-07-30 | 127.25d | 0d |  | Cost [22722.2 AED] | 22,722.2 | 20,449.98 | IAFAF21101C0 | IC | C | AF | AF | ME | 211 | 01 | BILL 11 | B08 | S2 | RI | R00 | ACF04 | 211 | 1121 | 223 |  | MEP | 90 | 25 | 85 | 75 |  | 25 | RI |  |  |  |  |  |
| IAFAF22017C0 |  | IC-AF ; Risers-Storm water drainage risers (All Floor) | 60d | 2011-07-10 A | 2011-10-13 | CAFAF22017C0, IAFAF22013C0 | 80% | 12d | 2011-07-25 | 2011-10-05 | 121.25d | 12.4d |  | PLUMBING [4357.2 h]; Cost [225032 AED] | 225,031.59 | 180,025.27 | IAFAF22017C0 | IC | C | AF | AF | ME | 220 | 17 | BILL 11 | B08 | S2 | RI | R00 | ACF04 | 220 | 1126 | 1519 |  | MEP | 70 | 25 |  | 25 |  | 25 | RI | 0 | 0 | 0 | 0 |  |
| IAFAF23029C0 |  | IC-AF ; Risers-Chilled water & heat recovery pip (All Floor) | 200d | 2011-07-10 A | 2011-11-03 | IAFAF23027C0 | 85% | 30d | 2011-08-27 | 2012-04-26 | 103.25d | 48d |  | MECHANICAL [84103.2 h]; Cost [4529295 AED] | 4,529,294.82 | 3,849,900.6 | IAFAF23029C0 | IC | C | AF | AF | ME | 230 | 29 | BILL 11 | B08 | S2 | RI | R00 | ACF04 | 230 | 1128 | 1521 |  | MEP | 80 | 10 | 80 | 25 |  | 10 | RI | 0 | 0 | 0 | 0 |  |
| IAFAF23031C0 |  | IC-AF ; Risers-Risers - Main Ducts (All Floor) | 66d | 2011-07-10 A | 2011-10-19 | IAFAF23025C0 | 75% | 16.5d | 2011-07-25 | 2011-10-12 | 116.75d | 0d |  | MECHANICAL [18259.2 h]; Cost [942535 AED] | 942,535.38 | 706,901.53 | IAFAF23031C0 | IC | C | AF | AF | ME | 230 | 31 | BILL 11 | B08 | S2 | RI | R00 | ACF04 | 230 | 1127 | 1520 |  | MEP | 75 | 50 | 75 | 25 |  | 65 | RI | 0 | 0 | 0 | 0 |  |
| IAFAF26035C0 |  | IC-AF ; Risers-Tray for Low voltage cables (power, comm, (All Floor) | 60d | 2011-07-10 A | 2011-09-29 A | IR8S105101C0, IR8S205101C0 | 100% |  | 2011-09-04 | 2011-11-15 |  |  |  | ELECTRICAL [1456.8 h]; Cost [79934.8 AED] | 79,934.77 | 79,934.77 | IAFAF26035C0 | IC | C | AF | AF | ME | 260 | 35 | BILL 11 | B08 | S2 | MEL | R00 | ACF04 | 260 | 1130 | 232 |  | MEP | 65 | 15 |  | 25 |  | 15 | RI |  |  |  |  |  |
| IAFAF22005C0 |  | IC-AF ; Risers-Secondary Steel for Domestic cold water risers (All Floor) | 17d | 2011-08-10 A | 2011-10-01 | DAFAF22005C0, IR8S105101C0, IR8S205101C0 | 100% | 0d | 2011-07-31 | 2011-08-18 | 121.25d | 0d |  | Cost [3263.75 AED] | 3,263.75 | 2,284.63 | IAFAF22005C0 | IC | C | AF | AF | ME | 220 | 05 | BILL 11 | B08 | S2 | RI | R00 | ACF04 | 220 | 1122 | 224 |  | MEP | 70 | 0 |  | 15 |  |  | RI |  |  |  |  | zero |
| IAFAF22007C0 |  | IC-AF ; Risers-Secondary Steel for Hot water risers (All Floor) | 17d | 2011-08-10 A | 2011-10-01 | DAFAF22007C0, IR8S105101C0, IR8S205101C0 | 100% | 0d | 2011-07-31 | 2011-08-18 | 121.25d | 0d |  | Cost [616 AED] | 616 | 431.2 | IAFAF22007C0 | IC | C | AF | AF | ME | 220 | 07 | BILL 11 | B08 | S2 | RI | R00 | ACF04 | 220 | 1123 | 225 |  | MEP | 70 | 0 |  | 25 |  |  | RI |  |  |  |  | zero |
| IAFAF22009C0 |  | IC-AF ; Risers-Secondary Steel for Medical Gas/air/vacuum risers (All Floor) | 17d | 2011-08-10 A | 2011-10-01 | DAFAF22009C0, IR8S105101C0, IR8S205101C0 | 100% | 0d | 2011-07-31 | 2011-08-18 | 116.45d | 0d |  | Cost [6932.05 AED] | 6,932.05 | 2,079.61 | IAFAF22009C0 | IC | C | AF | AF | ME | 220 | 09 | BILL 11 | B08 | S2 | RI | R00 | ACF04 | 220 | 1124 | 226 |  | MEP | 30 | 0 | 30 | 25 |  |  | RI |  |  |  |  | zero |
| IAFAF22011C0 |  | IC-AF ; Risers-Secondary Steel for Soil, waste & vent ris (All Floor) | 18d | 2011-08-10 A | 2011-10-01 | IR8S105101C0, IR8S205101C0 | 100% | 0d | 2011-08-06 | 2011-08-27 | 55.25d | 0d |  | Cost [6006.95 AED] | 6,006.95 | 3,604.17 | IAFAF22011C0 | IC | C | AF | AF | ME | 220 | 11 | BILL 11 | B08 | S2 | RI | R00 | ACF04 | 220 | 1125 | 227 |  | MEP | 60 | 0 |  | 35 |  |  | RI |  |  |  |  | zero |
| IAFAF22013C0 |  | IC-AF ; Risers-Secondary Steel for Storm water drainage risers (All Floor) | 18d | 2011-08-10 A | 2011-10-01 | IR8S105101C0, IR8S205101C0 | 100% | 0d | 2011-08-03 | 2011-08-24 | 121.25d | 0d |  | Cost [12932.9 AED] | 12,932.85 | 7,759.71 | IAFAF22013C0 | IC | C | AF | AF | ME | 220 | 13 | BILL 11 | B08 | S2 | RI | R00 | ACF04 | 220 | 1126 | 228 |  | MEP | 60 | 0 | 60 | 25 |  |  | RI |  |  |  |  | zero |
| IAFAF22019C0 |  | IC-AF ; Risers-Domestic cold water risers (All Floor) | 60d | 2011-08-10 A | 2011-10-13 | IAFAF22005C0 | 80% | 12d | 2011-10-04 | 2011-12-18 | 121.25d | 61.03d |  | PLUMBING [1099.2 h]; Cost [56789.2 AED] | 56,789.25 | 45,431.4 | IAFAF22019C0 | IC | C | AF | AF | ME | 220 | 19 | BILL 11 | B08 | S2 | RI | R00 | ACF04 | 220 | 1122 | 1515 |  | MEP | 80 | 0 |  | 15 |  |  | RI |  |  |  |  | zero |
| IAFAF22021C0 |  | IC-AF ; Risers-Hot water risers (All Floor) | 60d | 2011-08-10 A | 2011-10-13 | IAFAF22007C0 | 80% | 12d | 2011-10-08 | 2011-12-22 | 121.25d | 49.03d |  | PLUMBING [207.6 h]; Cost [10718.4 AED] | 10,718.4 | 8,574.72 | IAFAF22021C0 | IC | C | AF | AF | ME | 220 | 21 | BILL 11 | B08 | S2 | RI | R00 | ACF04 | 220 | 1123 | 1516 |  | MEP | 80 | 0 |  | 25 |  |  | RI |  |  |  |  | zero |
| IAFAF22023C0 |  | IC-AF ; Risers-Soil, waste & vent risers (All Floor) | 60d | 2011-08-10 A | 2011-11-14 | IAFAF22011C0 | 40% | 36d | 2011-09-11 | 2011-11-23 | 55.25d | 0d |  | PLUMBING [2023.2 h]; Cost [104521 AED] | 104,520.93 | 41,808.37 | IAFAF22023C0 | IC | C | AF | AF | ME | 220 | 23 | BILL 11 | B08 | S2 | RI | R00 | ACF04 | 220 | 1125 | 1518 |  | MEP | 40 | 0 |  | 25 |  |  | RI |  |  |  |  | zero |
| IAFAF23025C0 |  | IC-AF ; Risers-Secondary Steel for Main Ducts (All Floor) | 18d | 2011-08-10 A | 2011-10-01 | IR8S105101C0, IR8S205101C0 | 100% | 0d | 2011-08-03 | 2011-08-24 | 116.75d | 0d |  | Cost [54168.7 AED] | 54,168.7 | 43,334.96 | IAFAF23025C0 | IC | C | AF | AF | ME | 230 | 25 | BILL 11 | B08 | S2 | RI | R00 | ACF04 | 230 | 1127 | 229 |  | MEP | 70 | 0 |  | 35 |  |  | RI |  |  |  |  | zero |
| IAFAF23027C0 |  | IC-AF ; Risers-Secondary Steel for Chilled water & heat recovery pip (All Floor) | 17d | 2011-08-10 A | 2011-10-01 | DAFAF23027C0, IR8S105101C0, IR8S205101C0 | 100% | 0d | 2011-07-31 | 2011-08-18 | 103.25d | 0d |  | Cost [260304 AED] | 260,304.3 | 221,258.66 | IAFAF23027C0 | IC | C | AF | AF | ME | 230 | 27 | BILL 11 | B08 | S2 | RI | R00 | ACF04 | 230 | 1128 | 230 |  | MEP | 85 | 0 | 85 | 30 |  |  | RI |  |  |  |  | zero |
| IAFAF26033C0 |  | IC-AF ; Risers-Tray for High voltage cables (All Floor) | 60d | 2011-08-10 A | 2011-09-29 A | IR8S105101C0, IR8S205101C0 | 100% |  | 2011-10-04 | 2011-12-18 |  |  |  | ELECTRICAL [2498.4 h]; Cost [136105 AED] | 136,105.15 | 136,105.15 | IAFAF26033C0 | IC | C | AF | AF | ME | 260 | 33 | BILL 11 | B08 | S2 | MEL | R00 | ACF04 | 260 | 1129 | 231 |  | MEP | 80 | 0 |  | 25 |  |  | RI |  |  |  |  | zero |
| IAFAF26037C0 |  | IC-AF ; Risers-Tray for ELV risers (All Floor) | 60d | 2011-08-10 A | 2011-11-03 | IR8S105101C0, IR8S205101C0 | 50% | 30d | 2011-10-11 | 2011-12-25 | 91.25d | 0d |  | ELECTRICAL [4918.8 h]; Cost [268548 AED] | 268,548 | 134,274 | IAFAF26037C0 | IC | C | AF | AF | ME | 260 | 37 | BILL 11 | B08 | S2 | MEL | R00 | ACF04 | 260 | 1132 | 233 |  | MEP | 50 | 0 |  | 25 |  |  | RI |  |  |  |  | zero |
| IAFAF22015C0 |  | IC-AF ; Risers-Medical Gas/air/vacuum risers (All Floor) | 42d | 2011-09-05 A | 2011-10-19 | IAFAF22009C0 | 60% | 16.8d | 2011-09-15 | 2011-11-03 | 116.45d | 0d |  | PLUMBING [2336.4 h]; Cost [120618 AED] | 120,617.67 | 72,370.6 | IAFAF22015C0 | IC | C | AF | AF | ME | 220 | 15 | BILL 11 | B08 | S2 | RI | R00 | ACF04 | 220 | 1124 | 1517 |  | MEP |  |  | 10 | 25 |  |  | RI |  |  |  |  |  |
| IAFAF26039C0 |  | IC-AF ; Risers-High voltage cables (All Floor) | 42d | 2011-09-05 A | 2011-10-05 | IAFAF26033C0 | 90% | 4.2d | 2011-09-15 | 2011-11-02 | 129.05d | 38.04d |  | ELECTRICAL [3782.4 h]; Cost [206448 AED] | 206,448 | 185,803.2 | IAFAF26039C0 | IC | C | AF | AF | ME | 260 | 39 | BILL 11 | B08 | S2 | MEL | R00 | ACF04 | 260 | 1129 | 1522 |  | MEP |  |  |  | 25 |  |  | RI |  |  |  |  | zero |
| IAFAF26041C0 |  | IC-AF ; Risers-ELV Cables (All Floor) | 42d | 2011-11-15 | 2012-01-05 | IAFAF21103C0 FF, IAFAF22015C0 FF, IAFAF22017C0 FF, IAFAF22019C0 FF, IAFAF22021C0 FF, IAFAF22023C0 FF, IAFAF23029C0 FF, IAFAF23031C0 FF, IAFAF26037C0 SS, IAFAF26043C0 FF, IAFAF22023C0 |  |  |  |  | 55.25d | 0d |  | ELECTRICAL [1419.6 h]; Cost |  |  | IAFAF26041C0 | IC | C | AF | AF | ME | 260 | 41 | BILL 11 | B08 | S2 | MEL | R00 | ACF04 | 260 | 1132 | 1525 |  | MEP |  |  |  |  |  |  | RI |  |  |  |  |  |
| IAFAF26043C0 |  | IC-AF ; Risers-Lightning protection cables (All Floor) | 42d | 2011-11-15 | 2012-01-05 | DAFAF26043C0, IR8S103399C0, IR8S203399C0, IAFAF22023C0 |  |  |  |  | 55.25d | 0d |  | ELECTRICAL [16279.2 h]; Cost |  |  | IAFAF26043C0 | IC | C | AF | AF | ME | 260 | 43 | BILL 11 | B08 | S2 | MEL | R00 | ACF04 | 260 | 1131 | 1524 |  | MEP |  |  |  | 25 |  |  | RI |  |  |  |  | zero |
| IAFAF26045C0 |  | IC-AF ; Risers-Low voltage cables (power, comm, security) (All Floor) | 42d | 2011-11-15 | 2012-01-05 | IAFAF26035C0, IAFAF22023C0 |  |  |  |  | 55.25d | 0d |  | ELECTRICAL [18795.6 h]; Cost |  |  | IAFAF26045C0 | IC | C | AF | AF | ME | 260 | 45 | BILL 11 | B08 | S2 | MEL | R00 | ACF04 | 260 | 1130 | 1523 |  | MEP |  |  |  | 25 |  |  | RI |  |  |  |  | zero |

| ID | WBS | Activity | Duration | Start | Finish | Predecessors | Total float | Free float | Constraint | Resources | change id | CCAD BUILDING(SET) | CCAD PHASE(SET) | CCAD FLOOR(SET) | CCAD ZONE(SET) | CCAD WORK(SET) | CCAD SECTION(SET) | CCAD SERIAL No.(SET) | CCAD CBS(SET) | CCAD BILL(SET) | CCAD HANDOVER(SET) | CCAD TAG(SET) | CCAD REV(SET) | CCADACF (SET) | CCAD SSCF | No.of Wor Days | Duration/Differe | CCAD CSA | user_end_date3 | user_end_date4 | user_text4 | NEW ACTIVITY ID |
| --- | --- | --- | --- | --- | --- | --- | --- | --- | --- | --- | --- | --- | --- | --- | --- | --- | --- | --- | --- | --- | --- | --- | --- | --- | --- | --- | --- | --- | --- | --- | --- | --- |
|  | 10 | **Precommissioning Tesing & snagging** |  | 2012-01-07 | 2012-02-12 |  |  |  |  |  |  |  |  |  |  |  |  |  |  |  |  |  |  |  |  |  |  |  |  |  |  |  |
| IAFTS01802C0 |  | IC-AF ; MEP de-snag, FIREM sign-off | 12d | 2012-01-07 | 2012-01-19 | IAFAF26039C0, IAFAF26041C0, IAFAF26045C0 | 285d | 0d |  | TESTING & COMMISSIONING [1020 h]; Cost | IAFTS01802C0 | IC | C | AF | TS | SC | 018 | 02 | BILL 11 | B08 | S2 | 01 | R00 | ACF07 | 018 |  |  |  |  |  |  |  |
| IAFTS01801C0 |  | IC-AF ; Touch-up & Clean / JV inspection /CIR /De-snag | 18d | 2012-01-21 | 2012-02-11 | IAFAF26039C0, IAFAF26041C0, IAFAF26045C0, IAFTS01802C0 | 285d | 0d |  | TESTING & COMMISSIONING [170 h]; Cost | IAFTS01801C0 | IC | C | AF | TS | SC | 018 | 01 | BILL 11 | B08 | S2 | 02 | R00 | ACF07 | 018 |  |  |  |  |  |  |  |
| IAFTS01803C0 |  | IC-AF ; Consultant's final de-snag inspection | 0d | 2012-02-12 | 2012-02-12 | IAFTS01801C0 | 285d | 219.75d |  | Cost | IAFTS01803C0 | IC | C | AF | TS | SC | 018 | 03 | BILL 11 | B08 | S2 | 03 | R00 | ACF07 | 018 |  |  |  |  |  |  |  |
|  | VT | **Vertical Transpotation** |  | 2011-10-15 | 2012-12-23 |  |  |  |  |  |  |  |  |  |  |  |  |  |  |  |  |  |  |  |  |  |  |  |  |  |  |  |
|  | EL16 | **Lift (#16~17)** |  | 2011-10-15 | 2012-12-23 |  |  |  |  |  |  |  |  |  |  |  |  |  |  |  |  |  |  |  |  |  |  |  |  |  |  |  |
| IVT1614203C0 |  | IC-AF ; Ele(#16~17)- Fixing template, Plumbing (Lift) | 4d | 2011-10-15 | 2011-10-18 | IR8S103399C0, IR8S203399C0, IR8SB03303C0, IR8SE03305C0, GNHE08101C10 FS+44d | 258.12d | 0d |  | SERVICE LIFTS [7 h]; Cost | DVT1614203C0 | IC | C | VT | 16 | EL | 142 | 03 | BILL 11 | B11 | S2 | 22 | R00 | ACF11 | 142 | 123044096 | 117440512 | LE |  |  |  |  |
| IVT1614205C0 |  | IC-AF ; Ele(#16~17)- Install first rails (Lift) | 3d | 2011-10-19 | 2011-10-22 | IVT1614203C0 | 258.12d | 0d |  | SERVICE LIFTS [7 h]; Cost | DVT1614205C0 | IC | C | VT | 16 | EL | 142 | 05 | BILL 11 | B11 | S2 | 22 | R00 | ACF11 | 142 | 125059072 | 117440512 | LE |  |  |  |  |
| IVT1614207C0 |  | IC-AF ; Ele(#16~17)- Build false car (Lift) | 3d | 2011-10-23 | 2011-10-25 | IVT1614205C0 | 258.12d | 0d |  | SERVICE LIFTS [15 h]; Cost | DVT1614207C0 | IC | C | VT | 16 | EL | 142 | 07 | BILL 11 | B11 | S2 | 22 | R00 | ACF11 | 142 | 123044096 | 117440512 | LE |  |  |  |  |
| IVT1614209C0 |  | IC-AF ; Ele(#16~17)- Install brackets, rails & alignment (Lift) | 5d | 2011-10-26 | 2011-10-31 | IVT1614207C0 | 258.12d | 0d |  | SERVICE LIFTS [202 h]; Cost | DVT1614209C0 | IC | C | VT | 16 | EL | 142 | 09 | BILL 11 | B11 | S2 | 22 | R00 | ACF11 | 142 | 125059072 | 117440512 | LE |  |  |  |  |
| IVT1614211C0 |  | IC-AF ; Ele(#16~17)- Install Entrance frames & doors (Lift) | 5d | 2011-11-01 | 2011-11-09 | IVT1614209C0 | 258.12d | 0d |  | SERVICE LIFTS [150 h]; Cost | DVT1614211C0 | IC | C | VT | 16 | EL | 142 | 11 | BILL 11 | B11 | S2 | 22 | R00 | ACF11 | 142 | 123044096 | 117440512 | LE |  |  |  |  |
| IVT1614213C0 |  | IC-AF ; Ele(#16~17)- Install Machine & Controller (Lift) | 3d | 2011-11-10 | 2011-11-13 | IVT1614211C0 | 258.12d | 0d |  | SERVICE LIFTS [209 h]; Cost | DVT1614213C0 | IC | C | VT | 16 | EL | 142 | 13 | BILL 11 | B11 | S2 | 22 | R00 | ACF11 | 142 | 125059072 | 117440512 | LE |  |  |  |  |
| IVT1614215C0 |  | IC-AF ; Ele(#16~17)- Install Governor & rope (Lift) | 2d | 2011-11-14 | 2011-11-15 | IVT1614213C0 | 258.12d | 0d |  | SERVICE LIFTS [37 h]; Cost | DVT1614215C0 | IC | C | VT | 16 | EL | 142 | 15 | BILL 11 | B11 | S2 | 22 | R00 | ACF11 | 142 | 123044096 | 117440512 | LE |  |  |  |  |
| IVT1614217C0 |  | IC-AF ; Ele(#16~17)- Install counterweight frame (Lift) | 2d | 2011-11-16 | 2011-11-17 | IVT1614215C0 | 258.12d | 0d |  | SERVICE LIFTS [37 h]; Cost | DVT1614217C0 | IC | C | VT | 16 | EL | 142 | 17 | BILL 11 | B11 | S2 | 22 | R00 | ACF11 | 142 | 125059072 | 117440512 | LE | 2011-07-26 |  |  |  |
| IVT1614219C0 |  | IC-AF ; Ele(#16~17)- Hoistway truncking & Wiring (Lift) | 4d | 2011-11-19 | 2011-11-22 | IVT1614217C0 | 258.12d | 0d |  | SERVICE LIFTS [52 h]; Cost | DVT1614219C0 | IC | C | VT | 16 | EL | 142 | 19 | BILL 11 | B11 | S2 | 22 | R00 | ACF11 | 142 | 123044096 | 117440512 | LE | 2011-07-26 | 2011-07-30 | 100 |  |
| IVT1614221C0 |  | IC-AF ; Ele(#16~17)- Machine room wiring (Lift) | 4d | 2011-11-23 | 2011-11-28 | IVT1614219C0 | 258.12d | 0d |  | SERVICE LIFTS [7 h]; Cost | DVT1614221C0 | IC | C | VT | 16 | EL | 142 | 21 | BILL 11 | B11 | S2 | 22 | R00 | ACF11 | 142 | 125059072 | 117440512 | LE | 2011-07-31 | 2011-08-02 |  |  |
| IVT1614223C0 |  | IC-AF ; Ele(#16~17)- Build car frame (Lift) | 2d | 2011-11-29 | 2011-11-30 | IVT1614221C0 | 258.12d | 0d |  | SERVICE LIFTS [82 h]; Cost | DVT1614223C0 | IC | C | VT | 16 | EL | 142 | 23 | BILL 11 | B11 | S2 | 22 | R00 | ACF11 | 142 | 123044096 | 117440512 | LE | 2011-08-03 | 2011-08-06 |  |  |
| IVT1614225C0 |  | IC-AF ; Ele(#16~17)- Main roping (Lift) | 2.88d | 2011-12-01 | 2011-12-05 | IVT1614223C0 | 258.12d | 0d |  | SERVICE LIFTS [37 h]; Cost | DVT1614225C0 | IC | C | VT | 16 | EL | 142 | 25 | BILL 11 | B11 | S2 | 22 | R00 | ACF11 | 142 | 125059072 | 117440512 | LE | 2011-08-07 | 2011-08-11 |  |  |
| IVT1614227C0 |  | IC-AF ; Ele(#16~17)- Loading counterweights (Lift) | 2d | 2011-12-05 | 2011-12-07 | IVT1614225C0 | 258.12d | 0d |  | SERVICE LIFTS [7 h]; Cost | DVT1614227C0 | IC | C | VT | 16 | EL | 142 | 27 | BILL 11 | B11 | S2 | 22 | R00 | ACF11 | 142 | 123044096 | 117440512 | LE |  |  |  |  |
| IVT1614229C0 |  | IC-AF ; Ele(#16~17)- Dismantling false car (Lift) | 2d | 2011-12-07 | 2011-12-10 | IVT1614227C0 | 258.12d | 0d |  | SERVICE LIFTS [7 h]; Cost | DVT1614229C0 | IC | C | VT | 16 | EL | 142 | 29 | BILL 11 | B11 | S2 | 22 | R00 | ACF11 | 142 | 125059072 | 117440512 | LE |  |  |  |  |
| IVT1614231C0 |  | IC-AF ; Ele(#16~17)- Build cab & Wiring (Lift) | 10d | 2011-12-10 | 2011-12-21 | IVT1614229C0 | 258.12d | 0d |  | SERVICE LIFTS [75 h]; Cost | DVT1614231C0 | IC | C | VT | 16 | EL | 142 | 31 | BILL 11 | B11 | S2 | 22 | R00 | ACF11 | 142 | 123044096 | 117440512 | LE |  |  |  |  |
| IVT1614247C0 |  | IC-AF ; Ele(#16~17)- Inspection, Testing & Commis (Lift) | 6d | 2011-12-21 | 2011-12-28 | IVT1614231C0 | 286d | 265d |  | SERVICE LIFTS [52 h]; Cost | CVT3914247C0 | IC | C | VT | 16 | EL | 142 | 47 | BILL 11 | B11 | S2 | 22 | R00 | ACF11 | 142 |  |  | LE |  |  |  | 1531 |
| IVT1614248C0 |  | IC-AF ; Ele(#16~17)- Refurbishment | 35.12d | 2012-11-10 | 2012-12-23 | IVT1614247C0 | 21d | 0d | as late as possible | Labor General; Cost | CVT3914247C0 | IC | C | VT | 16 | EL | 142 | 47 | BILL 11 | B11 | S1 | 22 | R00 | ACF11 | 142 |  |  |  |  |  |  | 1531 |
|  | EL18 | **Lift (#18~19)** |  | 2011-10-18 | 2012-12-23 |  |  |  |  |  |  |  |  |  |  |  |  |  |  |  |  |  |  |  |  |  |  |  |  |  |  |  |
| IVT1814203C0 |  | IC-AF ; Ele(#18~19)- Fixing template, Plumbing (Lift) | 4d | 2011-10-18 | 2011-10-22 | IR8S103399C0, IR8S203399C0, IR8SB03303C0, IR8SE03305C0, GNHE08101C10 FS+47d | 108.75d | 0d |  | SERVICE LIFTS [7 h]; Cost | IVT1814203C0 | IC | C | VT | 18 | EL | 142 | 03 | BILL 11 | B11 | S2 | 21 | R00 | ACF11 | 142 | 123044096 | 117440512 | LE |  |  |  |  |
| IVT1814205C0 |  | IC-AF ; Ele(#18~19)- Install first rails (Lift) | 2d | 2011-10-23 | 2011-10-24 | IVT1814203C0 | 108.75d | 0d |  | SERVICE LIFTS [7 h]; Cost | IVT1814205C0 | IC | C | VT | 18 | EL | 142 | 05 | BILL 11 | B11 | S2 | 21 | R00 | ACF11 | 142 | 125059072 | 117440512 | LE |  |  |  |  |
| IVT1814207C0 |  | IC-AF ; Ele(#18~19)- Build false car (Lift) | 3d | 2011-10-25 | 2011-10-27 | IVT1814205C0 | 108.75d | 0d |  | SERVICE LIFTS [15 h]; Cost | IVT1814207C0 | IC | C | VT | 18 | EL | 142 | 07 | BILL 11 | B11 | S2 | 21 | R00 | ACF11 | 142 | 123044096 | 117440512 | LE |  |  |  |  |
| IVT1814209C0 |  | IC-AF ; Ele(#18~19)- Install brackets, rails & alignment (Lift) | 7d | 2011-10-29 | 2011-11-05 | IVT1814207C0 | 108.75d | 0d |  | SERVICE LIFTS [209 h]; Cost | IVT1814209C0 | IC | C | VT | 18 | EL | 142 | 09 | BILL 11 | B11 | S2 | 21 | R00 | ACF11 | 142 | 125059072 | 117440512 | LE |  |  |  |  |
| IVT1814211C0 |  | IC-AF ; Ele(#18~19)- Install Entrance frames & doors (Lift) | 7d | 2011-11-09 | 2011-11-16 | IVT1814209C0 | 108.75d | 0d |  | SERVICE LIFTS [157 h]; Cost | IVT1814211C0 | IC | C | VT | 18 | EL | 142 | 11 | BILL 11 | B11 | S2 | 21 | R00 | ACF11 | 142 | 123044096 | 117440512 | LE |  |  |  |  |
| IVT1814213C0 |  | IC-AF ; Ele(#18~19)- Install Machine & Controller (Lift) | 4.88d | 2011-11-17 | 2011-11-22 | IVT1814211C0 | 108.75d | 0d |  | SERVICE LIFTS [224 h]; Cost | IVT1814213C0 | IC | C | VT | 18 | EL | 142 | 13 | BILL 11 | B11 | S2 | 21 | R00 | ACF11 | 142 | 125059072 | 117440512 | LE |  |  |  |  |
| IVT1814215C0 |  | IC-AF ; Ele(#18~19)- Install Governor & rope (Lift) | 2d | 2011-11-22 | 2011-11-24 | IVT1814213C0 | 108.75d | 0d |  | SERVICE LIFTS [45 h]; Cost | IVT1814215C0 | IC | C | VT | 18 | EL | 142 | 15 | BILL 11 | B11 | S2 | 21 | R00 | ACF11 | 142 | 123044096 | 117440512 | LE |  |  |  |  |
| IVT1814217C0 |  | IC-AF ; Ele(#18~19)- Install counterweight frame (Lift) | 3d | 2011-11-24 | 2011-11-29 | IVT1814215C0 | 108.75d | 0d |  | SERVICE LIFTS [45 h]; Cost | IVT1814217C0 | IC | C | VT | 18 | EL | 142 | 17 | BILL 11 | B11 | S2 | 21 | R00 | ACF11 | 142 | 125059072 | 117440512 | LE |  |  |  |  |
| IVT1814219C0 |  | IC-AF ; Ele(#18~19)- Hoistway truncking & Wiring (Lift) | 6.88d | 2011-11-29 | 2011-12-08 | IVT1814217C0 | 108.75d | 0d |  | SERVICE LIFTS [52 h]; Cost | IVT1814219C0 | IC | C | VT | 18 | EL | 142 | 19 | BILL 11 | B11 | S2 | 21 | R00 | ACF11 | 142 | 123044096 | 117440512 | LE |  |  |  |  |
| IVT1814221C0 |  | IC-AF ; Ele(#18~19)- Machine room wiring (Lift) | 5d | 2011-12-08 | 2011-12-14 | IVT1814219C0 | 108.75d | 0d |  | SERVICE LIFTS [7 h]; Cost | IVT1814221C0 | IC | C | VT | 18 | EL | 142 | 21 | BILL 11 | B11 | S2 | 21 | R00 | ACF11 | 142 | 125059072 | 117440512 | LE |  |  |  |  |
| IVT1814223C0 |  | IC-AF ; Ele(#18~19)- Build car frame (Lift) | 3d | 2011-12-14 | 2011-12-18 | IVT1814221C0 | 108.75d | 0d |  | SERVICE LIFTS [82 h]; Cost | IVT1814223C0 | IC | C | VT | 18 | EL | 142 | 23 | BILL 11 | B11 | S2 | 21 | R00 | ACF11 | 142 | 123044096 | 117440512 | LE |  |  |  |  |
| IVT1814225C0 |  | IC-AF ; Ele(#18~19)- Main roping (Lift) | 2.88d | 2011-12-18 | 2011-12-21 | IVT1814223C0 | 114.88d | 0d |  | SERVICE LIFTS [45 h]; Cost | IVT1814225C0 | IC | C | VT | 18 | EL | 142 | 25 | BILL 11 | B11 | S2 | 21 | R00 | ACF11 | 142 | 125059072 | 117440512 | LE |  |  |  |  |
| IVT1814231C0 |  | IC-AF ; Ele(#18~19)- Build cab & Wiring (Lift) | 14.88d | 2011-12-18 | 2012-01-05 | IVT1814223C0 | 108.75d | 0d |  | SERVICE LIFTS [82 h]; Cost | IVT1814231C0 | IC | C | VT | 18 | EL | 142 | 31 | BILL 11 | B11 | S2 | 21 | R00 | ACF11 | 142 | 123044096 | 117440512 | LE |  |  |  |  |
| IVT1814227C0 |  | IC-AF ; Ele(#18~19)- Loading counterweights (Lift) | 3d | 2011-12-21 | 2011-12-25 | IVT1814225C0 | 114.88d | 0d |  | SERVICE LIFTS [7 h]; Cost | IVT1814227C0 | IC | C | VT | 18 | EL | 142 | 27 | BILL 11 | B11 | S2 | 21 | R00 | ACF11 | 142 | 123044096 | 117440512 | LE |  |  |  |  |
| IVT1814229C0 |  | IC-AF ; Ele(#18~19)- Dismantling false car (Lift) | 2.88d | 2011-12-25 | 2011-12-28 | IVT1814227C0 | 114.88d | 6.12d |  | SERVICE LIFTS [7 h]; Cost | IVT1814229C0 | IC | C | VT | 18 | EL | 142 | 29 | BILL 11 | B11 | S2 | 21 | R00 | ACF11 | 142 | 125059072 | 117440512 | LE |  |  |  |  |
| IVT1814247C0 |  | IC-AF ; Ele(#18~19)- Inspection, Testing & Commis (Lift) | 5.88d | 2012-01-05 | 2012-01-12 | IVT1814229C0, IVT1814231C0 | 108.75d | 0d |  | SERVICE LIFTS [60 h]; Cost | CVT3914247C0 | IC | C | VT | 18 | EL | 142 | 47 | BILL 11 | B11 | S2 | 21 | R00 | ACF11 | 142 |  |  | LE |  |  |  | 1531 |
| IVT1814248C0 |  | IC-AF ; Ele(#18~19)- Refurbishment | 35.12d | 2012-11-10 | 2012-12-23 | IVT1814247C0 | 21d | 0d | as late as possible | Labor General; Cost | CVT3914247C0 | IC | C | VT | 18 | EL | 142 | 47 | BILL 11 | B11 | S1 | 21 | R00 | ACF11 | 142 |  |  |  |  |  |  | 1531 |

| ID | WBS | Activity | Duration | Start | Finish | Predecessors | Complete | Remaining | Planned start | Planned finish | Total float | Free float | Resources | change id | CCAD BUILDING(SET) | CCAD PHASE(SET) | CCAD FLOOR(SET) | CCAD ZONE(SET) | CCAD WORK(SET) | CCAD SECTION(SET) | CCAD SERIAL No.(SET) | CCAD CBS(SET) | CCAD BILL(SET) | CCAD HANDOVER(SET) | CCAD TAG(SET) | CCAD REV(SET) | CCADACF (SET) | CCAD SSCF | P_811 | P_711 | CCAD CSA | RENZ % COMPLETE | Actual Cost | Phase | Area/ Department | Grids | Are | Weight & Nos | Process | Levels | Claimed This Month |
| --- | --- | --- | --- | --- | --- | --- | --- | --- | --- | --- | --- | --- | --- | --- | --- | --- | --- | --- | --- | --- | --- | --- | --- | --- | --- | --- | --- | --- | --- | --- | --- | --- | --- | --- | --- | --- | --- | --- | --- | --- | --- |
|  | CZ | **Controlled Zone** |  | 2012-12-24 | 2013-03-06 |  |  |  |  |  |  |  |  |  |  |  |  |  |  |  |  |  |  |  |  |  |  |  |  |  |  |  |  |  |  |  |  |  |  |  |  |
| IGNCZ01010G0 |  | IC-GN ; Minor Punch List (Controlled Zone) | 60d | 2012-12-24 | 2013-03-05 | MGNCZ00107M0 |  |  |  |  | 51d | 0d | TESTING & COMMISSIONING [850 h]; Cost | IGNCZ01010G0 | IC | G | GN | CZ | SC | 010 | 10 | BILL 8 | B08 | S2 | PI | R00 | ACF07 | 010 |  |  |  |  |  |  |  |  |  |  |  |  |  |
| IGNCZ01810G0 |  | IC-GN ; Medical Equipment Installation , T&C by 3rd Party (Controlled Zone) | 0d | 2012-12-24 | 2012-12-24 | MGNCZ00107M0 |  |  |  |  | 111d | 60d | Cost |  | GA |  |  | CZ |  |  |  | BILL 8 | B06 |  |  | R00 |  | GEN |  |  |  |  |  |  |  |  |  |  |  |  |  |
| IGNCZ01811G0 |  | IC-GN ; Fire Alarm , PMCS & EMCS Testing & Commissioning (Controlled Zone) | 60d | 2012-12-24 | 2013-03-05 | MGNCZ00107M0 |  |  |  |  | 51d | 0d | TESTING & COMMISSIONING [5098 h]; Cost | IGNCZ01811G0 | IC | G | GN | CZ | SC | 018 | 11 | BILL 8 | B08 | S2 | 01 | R00 | ACF07 | 018 |  |  |  |  |  |  |  |  |  |  |  |  |  |
| IGNCZ11010G0 |  | IC-GN ; Loose FF & E (Controlled Zone) | 0d | 2012-12-24 | 2012-12-24 | MGNCZ00107M0 |  |  |  |  | 111d | 60d | Cost | IGNCZ11010G0 | IC | G | GN | CZ | FI | 110 | 10 | BILL 8 | B08 | S2 | 02 | R00 | ACF08 | a |  |  |  |  |  |  |  |  |  |  |  |  |  |
| IGNCZ11020G0 |  | IC-GN ; Wall Mounted / Sensitive Equipment Install (Controlled Zone) | 0d | 2012-12-24 | 2012-12-24 | MGNCZ00107M0 |  |  |  |  | 111d | 60d | Cost | IGNCZ11020G0 | IC | G | GN | CZ | SC | 110 | 20 | BILL 8 | B08 | S2 | 02 | R00 | ACF08 | d |  |  |  |  |  |  |  |  |  |  |  |  |  |
| IGNCZ01100G0 |  | IC-GN ; Cleaning & Final Inspection (Controlled Zone) | 0d | 2013-03-06 | 2013-03-06 | IGNCZ01810G0, IGNCZ11010G0, IGNCZ01010G0, IGNCZ11020G0, IGNCZ01811G0 |  |  |  |  | 51d | 48.12d | Cost | TGNCZ01020G0 | PT | G | GN | CZ | SC | 010 | 20 | BILL 10 | B10 | S3 | IN | R00 | ACF07 | 010 |  |  |  |  |  |  |  |  |  |  |  |  |  |
|  | SW | **Swing Wing** |  | 2010-10-26 | 2013-03-12 |  |  |  |  |  |  |  |  |  |  |  |  |  |  |  |  |  |  |  |  |  |  |  |  |  |  |  |  |  |  |  |  |  |  |  |  |
|  | OA | **Overall** |  | 2011-06-08 | 2012-01-15 |  |  |  |  |  |  |  |  |  |  |  |  |  |  |  |  |  |  |  |  |  |  |  |  |  |  |  |  |  |  |  |  |  |  |  |  |
| SAFT1505509C0 |  | SW - Steel Staircase Installation (Stair # 15) (6F to 8FR) | 17.88d | 2011-06-08 A | 2011-09-29 A | CAFT1505509C0 | 100% |  | 2011-08-24 | 2011-09-15 |  |  | STRUCTURAL STEEL [30 T(Fe)]; Cost | IP3SE03305C0 | SW | C | AF | GEN | SW | 055 | 05 |  | B09 | S1 | 01 | R00 | ACF03 | 055 | 90 | 24.48 | ST |  |  |  |  |  |  |  |  |  |  |
| SAFT105509C0 |  | SW - Steel Staircase Installation (Stair # 1) (6F to 8FR) | 18d | 2011-07-08 A | 2011-10-30 | DAFT105509C0 | 10% | 16.2d | 2011-09-08 | 2011-09-28 | 164.05d | 0d | STRUCTURAL STEEL [39 T(Fe)]; Cost | IP3SE03305C0 | SW | C | AF | GEN | SW | 055 | 05 |  | B09 | S1 | 01 | R00 | ACF03 | 055 |  |  | ST |  |  |  |  |  |  |  |  |  |  |
| SAFT2305509C0 |  | SW - Steel Staircase Installation (Stair # 23) (6F to 8F) | 12d | 2011-10-08 | 2011-10-20 | BAFT2305509C1 FS+2d |  |  |  |  | 171.25d | 138d | STRUCTURAL STEEL [17 T(Fe)]; Cost | IP3SE03305C0 | SW | C | AF | GEN | SW | 055 | 05 |  | B09 | S1 | 01 | R00 | ACF03 | 055 |  |  | ST |  |  |  |  |  |  |  |  |  |  |
| SAFT1005509C0 |  | SW - Steel Staircase Installation (Stair # 10) (5F to 6F) | 14d | 2011-10-24 | 2011-11-12 | DAFT1005509C0 |  |  |  |  | 338.25d | 312.55d | STRUCTURAL STEEL [16 T(Fe)]; Cost | IP3SE03305C0 | SW | C | AF | GEN | SW | 055 | 05 |  | B09 | S1 | 01 | R00 | ACF03 | 055 |  |  | ST |  |  |  |  |  |  |  |  |  |  |
| SAFT1105509C0 |  | SW - Steel Staircase Installation (Stair # 11) (6F to 8F) | 23d | 2011-12-19 | 2012-01-15 | CAFT1105509C0 |  |  |  |  | 103.25d | 70d | STRUCTURAL STEEL [39 T(Fe)]; Cost | IP3SE03305C0 | SW | C | AF | GEN | SW | 055 | 05 |  | B09 | S1 | 01 | R00 | ACF03 | 055 |  |  | ST |  |  |  |  |  |  |  |  |  |  |
|  | 05 | **Level 5** |  | 2010-10-26 | 2012-10-30 |  |  |  |  |  |  |  |  |  |  |  |  |  |  |  |  |  |  |  |  |  |  |  |  |  |  |  |  |  |  |  |  |  |  |  |  |
|  | 01 | **Structure & Envelopment** |  | 2010-10-26 | 2012-03-24 |  |  |  |  |  |  |  |  |  |  |  |  |  |  |  |  |  |  |  |  |  |  |  |  |  |  |  |  |  |  |  |  |  |  |  |  |
| S05SA03307C0 |  | SW-05 ; Corewall Concrete (Zone SA) | 3d | 2010-10-26 A | 2010-11-06 A | D04SA03301C0 | 100% |  | 2011-01-02 | 2011-01-04 |  |  | CONCRETE [6688 h]; CONCRETE [168 m3]; Cost | S05SA03307C0 | SW | C | 05 | SA | CT | 033 | 07 | BILL 9 | B09 | S2 | 04 | R00 | ACF03 | 033 |  |  |  | 100 |  |  |  |  |  |  |  |  |  |
| S05SC03305C0 |  | SW-05 ; Corewall Concrete (Zone SC) | 6d | 2010-11-11 A | 2010-11-23 A | C04SC03311C0 | 100% |  | 2011-01-02 | 2011-01-08 |  |  | CONCRETE [6688 h]; CONCRETE [168 m3]; Cost | S05SC03305C0 | SW | C | 05 | SC | CT | 033 | 05 | BILL 9 | B09 | S2 | 04 | R00 | ACF03 | 033 |  |  |  | 100 |  |  |  |  |  |  |  |  |  |
| S05S105101C0 |  | SW-05 ; Erection of Structural Steel of 5th Floor (Zone S1) | 4.63d | 2010-12-18 A | 2011-03-06 A | D04S105103C0, OGNMU00005S0, S05SA03307C0 | 100% |  | 2011-01-12 | 2011-01-17 |  |  | STRUCTURAL STEEL [4597 h]; STRUCTURAL STEEL [154 T(Fe)]; Cost | S05S105101C0 | SW | C | 05 | S1 | ST | 051 | 01 | BILL 9 | B09 | S2 | 01 | R00 | ACF03 | 051 |  |  | ST | 100 | 1756740.91 | Z2 | SW | 5TH | C | A8B | EREC | 6FLR |  |
| S05S105103C0 |  | SW-05 ; Alignment & welding of 5th Floor (Zone S1) | 5d | 2010-12-24 A | 2011-03-30 A | S05S105101C0 | 100% |  | 2011-01-18 | 2011-01-24 |  |  | STRUCTURAL STEEL [468 h]; Cost | S05S105103C0 | SW | C | 05 | S1 | ST | 051 | 03 | BILL 9 | B09 | S2 | 02 | R00 | ACF03 | 051 |  |  | ST | 100 | 195193.43 | Z2 | SW | 5TH | C | A8B | EREC | 6FLR |  |
| S05S205101C0 |  | SW-05 ; Erection of Structural Steel of 5th Floor (Zone S2) | 13d | 2010-12-24 A | 2011-03-30 A | C04S105103C0, S05SC03305C0 | 100% |  | 2011-01-15 | 2011-01-30 |  |  | STRUCTURAL STEEL [9844 h]; STRUCTURAL STEEL [330 T(Fe)]; Cost | S05S205101C0 | SW | C | 05 | S2 | ST | 051 | 01 | BILL 9 | B09 | S2 | 01 | R00 | ACF03 | 051 |  |  | ST | 100 |  | Z2 | SW | 5TH | C | A8B | EREC | 6FLR |  |
| S05S205103C0 |  | SW-05 ; Alignment & welding of 5th Floor (Zone S2) | 10d | 2011-01-04 A | 2011-05-30 A | S05S205101C0 | 100% |  | 2011-01-31 | 2011-02-12 |  |  | STRUCTURAL STEEL [594 h]; Cost | S05S205103C0 | SW | C | 05 | S2 | ST | 051 | 03 | BILL 9 | B09 | S2 | 02 | R00 | ACF03 | 051 |  |  | ST | 100 |  | Z2 | SW | 5TH | C | A8B | EREC | 6FLR |  |
| S05S305101C0 |  | SW-05 ; Erection of Structural Steel of 5th Floor (Zone S3) | 8.34d | 2011-01-20 A | 2011-03-28 A | D04S305103C0 | 100% |  | 2011-01-17 | 2011-01-26 |  |  | STRUCTURAL STEEL [3398 h]; STRUCTURAL STEEL [114 T(Fe)]; Cost | S05S305101C0 | SW | C | 05 | S3 | ST | 051 | 01 | BILL 9 | B09 | S2 | 01 | R00 | ACF03 | 051 |  |  | ST | 100 | 4300700.62 | Z2 | SW | 5TH | C | A8B | EREC | 6FLR |  |
| S05S305103C0 |  | SW-05 ; Alignment & welding of 5th Floor (Zone S3) | 8d | 2011-01-28 A | 2011-06-02 A | S05S305101C0 | 100% |  | 2011-02-13 | 2011-02-22 |  |  | STRUCTURAL STEEL [1147 h]; Cost | S05S305103C0 | SW | C | 05 | S3 | ST | 051 | 03 | BILL 9 | B09 | S2 | 02 | R00 | ACF03 | 051 |  |  | ST | 95 |  | Z2 | SW | 5TH | C | A8B | EREC | 6FLR | 23218.27 |
| S05S105305C0 |  | SW-05 ; Metal Decking Lvl - 5 (Zone S1) | 16d | 2011-02-23 A | 2011-02-28 A | OGNMU00005S0, S05S105103C0, S06S105101C0 | 100% |  | 2011-02-01 | 2011-02-20 |  |  | METAL DECKING [2065 h]; METAL DECKING [1232 m2]; Cost | S05S105305C0 | SW | C | 05 | S1 | ST | 053 | 05 | BILL 9 | B09 | S2 | 03 | R00 | ACF03 | 053 |  |  | ST | 100 |  | Z2 | SW | 5TH | C | A8B | MDEC | 6FLR |  |
| S05S305305C0 |  | SW-05 ; Metal Decking Lvl - 5 (Zone S3) | 18d | 2011-03-05 A | 2011-06-01 A | S05S305103C0, S06S305101C0 | 100% |  | 2011-03-10 | 2011-03-31 |  |  | METAL DECKING [5054 h]; METAL DECKING [3015 m2]; Cost | S05S305305C0 | SW | C | 05 | S3 | ST | 053 | 05 | BILL 9 | B09 | S2 | 03 | R00 | ACF03 | 053 |  |  | ST | 95 |  | Z2 | SW | 5TH | C | A8B | MDEC | 6FLR | 17820.81 |
| S05S303399C0 |  | SW-05 ; Concrete on Metal Decking Lvl - 5 (Zone S3) | 10.07d | 2011-04-05 A | 2011-06-02 A | S05S305305C0 | 100% |  | 2011-03-31 | 2011-04-12 |  |  | CONCRETE [13752 h]; CONCRETE [346 m3]; Cost | S05S305335C0 | SW | C | 05 | S3 | CT | 033 | 99 | BILL 9 | B09 | S2 | 08 | R00 | ACF03 | 033 |  |  |  | 95 |  | Z2 | SW | 5TH | C | A8B | MDEC | 6FLR | 21033.16 |
| S05S103399C0 |  | SW-05 ; Concrete on Metal Decking Lvl - 5 (Zone S1) | 10d | 2011-04-07 A | 2011-06-04 A | S05S105305C0 | 100% |  | 2011-03-01 | 2011-03-13 |  |  | CONCRETE [5568 h]; CONCRETE [140 m3]; Cost | S05S105335C0 | SW | C | 05 | S1 | CT | 033 | 99 | BILL 9 | B09 | S2 | 08 | R00 | ACF03 | 033 |  |  |  | 95 |  | Z2 | SW | 5TH | C | A8B | MDEC | 6FLR | 8591.58 |
| S05S205305C0 |  | SW-05 ; Metal Decking Lvl - 5 (Zone S2) | 18d | 2011-04-11 A | 2011-05-30 A | S05S205103C0, S06S205101C0 | 100% |  | 2011-03-23 | 2011-04-13 |  |  | METAL DECKING [2618 h]; METAL DECKING [1562 m2]; Cost | S05S205305C0 | SW | C | 05 | S2 | ST | 053 | 05 | BILL 9 | B09 | S2 | 03 | R00 | ACF03 | 053 |  |  | ST | 100 |  | Z2 | SW | 5TH | C | A8B | MDEC | 6FLR |  |
| S05S107807C0 |  | SW-05 ; Cementitious Fire Proofing Lvl - 5 (Zone S1) | 10d | 2011-05-01 A | 2011-06-11 A | S05S103399C0, S06S103399C0 | 100% |  | 2011-05-31 | 2011-06-12 |  |  | CEMENTITIOUS FIREPROOFING [519 h]; CEMENTITIOUS FIREPROOFING [1037 m2]; Cost | S05S107807C0 | SW | C | 05 | S1 | ST | 078 | 07 | BILL 9 | B09 | S2 | 04 | R00 | ACF03 | 078 |  |  | ST | 95 |  | Z2 | SW | 5TH | C | A8B | FIRE | 6FLR | 8197.32 |
| S05S203399C0 |  | SW-05 ; Concrete on Metal Decking Lvl - 5 (Zone S2) | 10d | 2011-05-15 A | 2011-05-30 A | S05S205305C0 | 100% |  | 2011-06-06 | 2011-06-18 |  |  | CONCRETE [8272 h]; CONCRETE [208 m3]; Cost | S05S205335C0 | SW | C | 05 | S2 | CT | 033 | 99 | BILL 9 | B09 | S2 | 08 | R00 | ACF03 | 033 |  |  |  | 100 |  | Z2 | SW | 5TH | C | A8B | MDEC | 6FLR |  |
| S05S207807C0 |  | SW-05 ; Cementitious Fire Proofing Lvl - 5 (Zone S2) | 9d | 2011-05-15 A | 2011-05-30 A | S05S203399C0, S06S203399C0 | 100% |  | 2011-06-18 | 2011-06-29 |  |  | CEMENTITIOUS FIREPROOFING [657 h]; CEMENTITIOUS FIREPROOFING [1314 m2]; Cost | S05S207807C0 | SW | C | 05 | S2 | ST | 078 | 07 | BILL 9 | B09 | S2 | 04 | R00 | ACF03 | 078 |  |  | ST | 100 |  | Z2 | SW | 5TH | C | A8B | FIRE | 6FLR |  |
| S05S307807C0 |  | SW-05 ; Cementitious Fire Proofing Lvl - 5 (Zone S3) | 10d | 2011-05-15 A | 2011-06-07 A | S05S303399C0, S06S303399C0 | 100% |  | 2011-07-10 | 2011-07-21 |  |  | CEMENTITIOUS FIREPROOFING [1269 h]; CEMENTITIOUS FIREPROOFING [2537 m2]; Cost | S05S307807C0 | SW | C | 05 | S3 | ST | 078 | 07 | BILL 9 | B09 | S2 | 04 | R00 | ACF03 | 078 |  |  | ST | 95 |  | Z2 | SW | 5TH | C | A8B | FIRE | 6FLR | 20067.96 |
| S05CO04403C0 |  | SW-05 ; M2 Bracket (Common Zone) | 42d | 2011-09-05 A | 2011-11-14 | OGNMU00039S0, S05S107807C0 FS+93d, S05S207807C0, S05S307807C0 | 15% | 35.7d | 2011-10-01 | 2011-11-21 | 67.3d | 0d | FACADE METAL PANEL 2 [401.1 h]; Cost | S05CO04403C0 | SW | C | 05 | CO | FA | 044 | 03 | BILL 9 | B09 | S2 | FM2 | R00 | ACF05 | 044 |  |  | FA |  |  |  |  |  |  |  |  |  |  |
| S05CO04415C0 |  | SW-05 ; SG Catwalk Installation (Common Zone) | 74d | 2011-10-30 | 2012-01-31 | SEXCO04403C0 SS |  |  |  |  | 167.08d | 0d | Labor General [6485 h]; Cost | I05CO04411C0 | SW | C | 05 | CO | FA | 044 | 11 | BILL 9 | B09 | S2 | SG | R00 | ACF05 | 044 |  |  | FA |  |  |  |  |  |  |  |  |  |  |
| S05CO04407C0 |  | SW-05 ; M2 External Partition (Common Zone) | 54d | 2011-11-14 | 2012-01-19 | S05CO04403C0 |  |  |  |  | 339.3d | 0d | PARTITIONS [497.65 m]; PARTITIONS [5370 h]; Cost | S05CO04407C0 | SW | C | 05 | CO | FA | 044 | 07 | BILL 9 | B09 | S2 | FM2 | R00 | ACF05 | 044 |  |  | FA |  |  |  |  |  |  |  |  |  |  |
| S05CO04419C0 |  | SW-05 ; Ceiling Bracket (Common Zone) | 8.93d | 2011-11-20 | 2011-12-01 | S05S107807C0, S05S207807C0, S05S307807C0, PP1S903372C0 FS+36d |  |  |  |  | 349.88d | 0d | Labor General [0.6 h]; Cost | T09CO04409C0 | SW | C | 05 | CO | FA | 044 | 09 | BILL 10 | B09 | S2 | PAR | R00 | ACF05 | 044 |  |  | FA |  |  |  |  |  |  |  |  |  |  |
| S05CO04408C0 |  | SW-05 ; Ceiling Rockwool transom & mullion (Common Zone) | 42d | 2011-12-01 | 2012-01-22 | S05CO04419C0 |  |  |  |  | 349.88d | 0d | Labor General [0.6 h]; Cost | T09CO04408C0 | SW | C | 05 | CO | FA | 044 | 08 | BILL 10 | B09 | S2 | PAR | R00 | ACF05 | 044 |  |  | FA |  |  |  |  |  |  |  |  |  |  |
| S05CO04413C0 |  | SW-05 ; M2 Metal Panel (Common Zone) | 54d | 2012-01-19 | 2012-03-24 | S05CO04407C0, S05BM110B2C0 FF |  |  |  |  | 339.3d | 336.43d | FACADE METAL PANEL 2 [4228 h]; FACADE METAL PANEL 2 [1545 m2]; FACADE TOTAL QUANTITY m2 [1545 m2]; Cost | S05CO04413C0 | SW | C | 05 | CO | FA | 044 | 13 | BILL 9 | B09 | S2 | FM2 | R00 | ACF05 | 044 |  |  | FA |  |  |  |  |  |  |  |  |  |  |
| S05CO04417C0 |  | SW-05 ; Ceiling Rockwool &panel (Common Zone) | 42d | 2012-01-22 | 2012-03-12 | S05CO04408C0 |  |  |  |  | 349.88d | 347d | Labor General [0.6 h]; Cost | T09CO04407C0 | SW | C | 05 | CO | FA | 044 | 07 | BILL 10 | B09 | S2 | PAR | R00 | ACF05 | 044 |  |  | FA |  |  |  |  |  |  |  |  |  |  |

| ID | WBS | Activity | Duration | Start | Finish | Predecessors | Complete | Remaining | Planned start | Planned finish | Total float | Free float | Resources | Cost | Actual cost | user_number8 | user_integer1 | user_integer2 | user_number7 | change id | RENZ % COMPLETE | July2011 Target% Complete | P_811 | P_711 | U% | CCAD BUILDING(SET) | CCAD PHASE(SET) | CCAD FLOOR(SET) | CCAD ZONE(SET) | CCAD WORK(SET) | CCAD SECTION(SET) | CCAD SERIAL No.(SET) | CCAD SUB ZONE MEP(SET) | CCAD CBS(SET) | CCAD BILL(SET) | CCAD HANDOVER(SET) | CCAD TAG(SET) | CCAD REV(SET) | CCADACF (SET) | CCAD MEQ | CCAD CSA | CCAD SSCF | Act Selector % | Change Order # | NEW ACTIVITY ID | CCAD DIVISION(SET) |
| --- | --- | --- | --- | --- | --- | --- | --- | --- | --- | --- | --- | --- | --- | --- | --- | --- | --- | --- | --- | --- | --- | --- | --- | --- | --- | --- | --- | --- | --- | --- | --- | --- | --- | --- | --- | --- | --- | --- | --- | --- | --- | --- | --- | --- | --- | --- |
|  | 02 | **Mech-1** |  | 2011-05-09 | 2012-10-13 |  |  |  |  |  |  |  |  |  |  |  |  |  |  |  |  |  |  |  |  |  |  |  |  |  |  |  |  |  |  |  |  |  |  |  |  |  |  |  |  |  |
| S05M123013C0 |  | SW-05 ; 2nd Fix, Inst of Equipment (AHU) (Mech RM) | 90d | 2011-05-09 A | 2012-02-09 | S05M109201C0 FS+30d, S05M122006C0 FF, S05M122011C0 FF, S05S107807C0, S05S207807C0, S05S307807C0 | 35% | 58.5d | 2011-08-25 | 2011-12-17 | 90.05d | 0d | MECHANICAL [13884 h]; Cost [3159394 AED] | 3,159,394.42 | 1,105,788.05 | 0 | 0 | 0 | 0 | S05ME23013C0 | 30 | 100 | 35 | 30 | 35 | SW | C | 05 | M1 | ME | 230 | 13 | 2n | BILL 9 | B09 | S2 | 2F | R00 | ACF04 | H | MEP | 230 |  |  |  |  |
| S05M123001C0 |  | SW-05 ; 1st Fix, Inst. of Supports for MEP (Mech RM) | 30d | 2011-05-16 A | 2011-05-24 A | S05S107807C0, S05S207807C0 | 100% |  | 2011-06-30 | 2011-08-04 |  |  | MECHANICAL [536.4 h]; Cost [30275.7 AED] | 30,275.67 | 30,275.67 |  |  |  |  | S05ME23001C0 | 100 |  |  |  |  | SW | C | 05 | M1 | ME | 230 | 01 | 1S | BILL 9 | B09 | S2 | 1F | R00 | ACF04 |  | MEP | 230 | M1F |  |  |  |
| S05M109201C0 |  | SW-05 ; Metal Studs (Mech RM) | 45d | 2011-07-10 A | 2011-10-20 | S05M123001C0 | 60% | 18d | 2011-07-07 | 2011-08-29 | 47.5d | 0d | PARTITIONS [2396 h]; PARTITIONS - Metal Studs [173 m]; Cost |  |  | 0 | 0 | 0 | 0 | S05ME09201C0 |  |  | 45 | 40 | 60 | SW | C | 05 | M1 | PT | 092 | 01 |  | BILL 9 | B09 | S2 | 1F | R00 | ACF06 |  | GP | 092 | PMS |  |  |  |
| S05M122011C0 |  | SW-05 ; 1st Fix, Inst of Drainage pipe (Mech RM) | 60d | 2011-07-10 A | 2011-11-21 | S05M123001C0, S05M126001C0 SS+14d | 30% | 42d | 2011-07-17 | 2011-09-26 | 142.55d | 0d | PLUMBING [310.8 h]; Cost [16770.4 AED] | 16,770.39 | 5,031.12 | 0 | 0 | 0 | 0 | S05ME22011C0 |  | 15 | 10 | 5 | 15 | SW | C | 05 | M1 | ME | 220 | 11 | 1S | BILL 9 | B09 | S2 | 1F | R00 | ACF04 |  | MEP | 220 | M1F |  |  |  |
| S05M109203C0 |  | SW-05 ; Partitions 1st face (Mech RM) | 45d | 2011-08-10 A | 2011-12-05 | S05M109201C0 | 25% | 33.75d | 2011-10-13 | 2011-12-10 | 207.5d | 2.25d | PARTITIONS [173 m]; PARTITIONS [1870 h]; Cost |  |  | 0 | 0 | 0 | 0 | S05ME09203C0 |  |  | 10 | 0 | 25 | SW | C | 05 | M1 | PT | 092 | 03 |  | BILL 9 | B09 | S2 | 2F | R00 | ACF06 |  | GP | 092 | P1F | 314 | 1463 |  |
| S05M121111C0 |  | SW-05 ; 1st Fix, Inst of Sprinkler main pipe (Mech RM) | 60d | 2011-08-10 A | 2011-11-24 | S05M123001C0 SS | 25% | 45d | 2011-09-04 | 2011-11-15 | 193.25d | 0d | MECHANICAL [921.6 h]; Cost [43268 AED] | 43,267.97 | 10,816.99 | 0 | 0 | 0 | 0 | S05ME21111C0 |  | 40 | 20 | 0 | 25 | SW | C | 05 | M1 | ME | 211 | 11 | 1S | BILL 9 | B09 | S2 | 1F | R00 | ACF04 |  | MEP | 211 | M1F |  |  |  |
| S05M121119C0 |  | SW-05 ; 1st Fix, Inst of Sprinkler branch pipe (Mech RM) | 60d | 2011-08-10 A | 2011-11-24 | S05M121111C0 SS | 25% | 45d | 2011-11-28 | 2012-02-08 | 250.25d | 45d | MECHANICAL [682.8 h]; Cost [37306.8 AED] | 37,306.8 | 9,326.7 | 0 | 0 | 0 | 0 | S05ME21119C0 |  |  | 20 | 0 | 25 | SW | C | 05 | M1 | ME | 211 | 19 | 1S | BILL 9 | B09 | S2 | 1F | R00 | ACF04 |  | MEP | 211 | M1F |  |  |  |
| S05M126001C0 |  | SW-05 ; 1st Fix, Inst of Trunking/Conduiting (Mech RM) | 48d | 2011-09-05 A | 2011-11-23 | S05M123001C0 | 10% | 43.2d | 2011-09-01 | 2011-10-26 | 142.55d | 0d | ELECTRICAL [447.6 h]; Cost [24105.1 AED] | 24,105.11 | 2,410.51 |  |  |  |  | S05ME26001C0 |  | 15 |  |  | 10 | SW | C | 05 | M1 | ME | 260 | 01 | 1S | BILL 9 | B09 | S2 | 1F | R00 | ACF04 |  | MEP | 260 | M1F |  |  |  |
| S05M126011C0 |  | SW-05 ; 1st Fix, Inst of Cable Tray (Mech RM) | 48d | 2011-09-05 A | 2012-03-31 | S05M123013C0 | 10% | 43.2d | 2011-11-23 | 2012-01-21 | 91.55d | 0d | ELECTRICAL [231.6 h]; Cost [13047.4 AED] | 13,047.37 | 1,304.74 |  |  |  |  | S05ME26011C0 |  | 10 |  |  |  | SW | C | 05 | M1 | ME | 260 | 11 | 1S | BILL 9 | B09 | S2 | 1F | R00 | ACF04 |  | MEP | 260 | M1F |  |  |  |
| S05M127010C0 |  | SW-05 ; 1st Fix, Inst of Trunking for ELV system (Mech RM) | 48d | 2011-09-05 A | 2012-04-02 | S05M123005C0 | 10% | 43.2d | 2011-11-24 | 2012-01-23 | 90.05d | 0d | ELECTRICAL [991.2 h]; Cost [51056.8 AED] | 51,056.81 | 5,105.68 |  |  |  |  | S05ME27010C0 |  |  |  |  | 10 | SW | C | 05 | M1 | ME | 270 | 10 | 1S | BILL 9 | B09 | S2 | 1F | R00 | ACF04 |  | MEP | 270 | M1F |  |  |  |
| S05M122006C0 |  | SW-05 ; 1st Fix, Inst of Water supply pipe (Mech RM) | 54d | 2011-10-01 | 2011-12-07 | S05M122011C0 SS+10d, S05M123001C0 |  |  |  |  | 142.55d | 0d | PLUMBING [1688.4 h]; Cost |  |  |  |  |  |  | S05ME22006C0 |  |  |  |  |  | SW | C | 05 | M1 | ME | 220 | 06 | 1S | BILL 9 | B09 | S2 | 1F | R00 | ACF04 |  | MEP | 220 | M1F |  |  |  |
| S05M123019C0 |  | SW-05 ; 1st Fix, Inst of CHW pipe (Mech RM) | 54d | 2011-10-01 | 2011-12-07 | S05M121111C0 SS+12d, S05M123001C0 |  |  |  |  | 193.25d | 52.5d | MECHANICAL [1687.2 h]; Cost |  |  |  |  |  |  | S05ME23019C0 |  | 10 |  |  |  | SW | C | 05 | M1 | ME | 230 | 19 | 1S | BILL 9 | B09 | S2 | 1F | R00 | ACF04 |  | MEP | 230 | M1F |  |  |  |
| S05M108101C0 |  | SW-05 ; Metal Door Frames (Mech RM) | 18d | 2011-11-05 | 2011-11-29 | OGNMU00027S0, S05M109201C0, GNHE08101C0 FS+69d, S05PA08103C0 SS+3d |  |  |  |  | 35.5d | 0d | METAL DOORS [34 h]; Cost |  |  |  |  |  |  | S05ME08101C0 |  |  |  |  |  | SW | C | 05 | M1 | DO | 081 | 01 |  | BILL 9 | B09 | S2 | DF | R00 | ACF06 |  |  | 081 |  | 316 | 1465 | 08 |
| S05M123005C0 |  | SW-05 ; 1st Fix, Inst of Ducting (Mech RM) | 60d | 2011-11-30 | 2012-02-11 | S05M123001C0, S05M123013C0 SS+12d |  |  |  |  | 90.05d | 0d | MECHANICAL [6650.4 h]; Cost |  |  |  |  |  |  | S05ME23005C0 |  |  |  |  |  | SW | C | 05 | M1 | ME | 230 | 05 | 1S | BILL 9 | B09 | S2 | 1F | R00 | ACF04 |  | MEP | 230 | M1F |  |  |  |
| S05M109205C0 |  | SW-05 ; Partitions Closing (Mech RM) | 36d | 2011-12-08 | 2012-01-19 | S05M109201C0, S05M109203C0, S05M122006C0, S05M122011C0, SAFOA09212C1 FF, S05M108101C0 FF |  |  |  |  | 205.25d | 0d | PARTITIONS [173 m]; PARTITIONS [2405 h]; Cost |  |  |  |  |  |  | S05ME09205C0 |  |  |  |  |  | SW | C | 05 | M1 | PT | 092 | 05 |  | BILL 9 | B09 | S2 | FF | R00 | ACF06 |  | GP | 092 | P2F | 315 | 1464 |  |
| S05M109901C0 |  | SW-05 ; Wall Prime & 1st coat (Mech RM) | 24d | 2012-01-21 | 2012-02-18 | OGNMU00057S0, OGNMU00057S0 FF, S05M109205C0 |  |  |  |  | 217.25d | 0d | WALL PAINT [635 h]; WALL PAINT [792 m2]; Cost |  |  |  |  |  |  | S05ME09901C0 |  |  |  |  |  | SW | C | 05 | M1 | PA | 099 | 01 |  | BILL 9 | B09 | S2 | 01 | R00 | ACF06 |  |  | 099 |  | 328 | 1469 |  |
| S05M121115C0 |  | SW-05 ; 2nd Fix, Inst of Sprinkler droppers (Mech RM) | 42d | 2012-01-21 | 2012-03-10 | S05M109205C0, S05M121119C0 |  |  |  |  | 205.25d | 0d | MECHANICAL [1309.2 h]; Cost |  |  |  |  |  |  | S05ME21115C0 |  |  |  |  |  | SW | C | 05 | M1 | ME | 211 | 15 | 2n | BILL 9 | B09 | S2 | 2F | R00 | ACF07 |  | MEP | 211 |  |  |  |  |
| S05M121123C0 |  | SW-05 ; Final Fix, Inst of Fire Extinguishers/FHC (Mech RM) | 36d | 2012-01-21 | 2012-03-03 | S05M109205C0 |  |  |  |  | 247.25d | 157.2d | MECHANICAL [2241.6 h]; Cost |  |  |  |  |  |  | S05ME21123C0 |  |  |  |  |  | SW | C | 05 | M1 | ME | 211 | 23 | FF | BILL 9 | B09 | S2 | FF | R00 | ACF07 |  | MEP | 211 |  |  |  |  |
| S05M126015C0 |  | SW-05 ; Final Fix, Inst of Ceiling rose (Mech RM) | 36d | 2012-01-21 | 2012-03-03 | S05M109205C0 |  |  |  |  | 247.25d | 157.2d | ELECTRICAL [36 h]; Cost |  |  |  |  |  |  | S05ME26015C0 |  |  |  |  |  | SW | C | 05 | M1 | ME | 260 | 15 | FF | BILL 9 | B09 | S2 | FF | R00 | ACF07 |  | MEP | 260 |  |  |  |  |
| S05M107101C0 |  | SW-05 ; Waterproofing (Mech RM) | 15d | 2012-02-09 | 2012-02-27 | S05M123013C0 |  |  |  |  | 187d | 0d | THERMAL & MOISTURE [128 h]; THERMAL & MOISTURE [835 m2]; Cost |  |  |  |  |  |  | I05ME09901C0 |  |  |  |  |  | SW | C | 05 | M1 | FF | 071 | 01 |  | BILL 9 | B09 | S2 | 01 | R00 | ACF03 |  |  | 071 |  | 328 | 1469 |  |
| S05M121117C0 |  | SW-05 ; 2nd Fix, Inst of Zone Control Valve (Mech RM) | 42d | 2012-02-09 | 2012-03-29 | S05M123013C0, S05M123019C0 |  |  |  |  | 140.75d | 50.7d | MECHANICAL [604.8 h]; Cost |  |  |  |  |  |  | S05ME21117C0 |  |  |  |  |  | SW | C | 05 | M1 | ME | 211 | 17 | 2n | BILL 9 | B09 | S2 | 2F | R00 | ACF07 |  | MEP | 211 |  |  |  |  |
| S05M123011C0 |  | SW-05 ; 2nd Fix, Inst of Equipment (FCU,FAN,PUMP) (Mech RM) | 54d | 2012-02-09 | 2012-04-12 | S05M123013C0 |  |  |  |  | 128.75d | 0d | MECHANICAL [3559.2 h]; Cost |  |  |  |  |  |  | S05ME23011C0 |  |  |  |  |  | SW | C | 05 | M1 | ME | 230 | 11 | 2n | BILL 9 | B09 | S2 | 2F | R00 | ACF04 | H | MEP | 230 |  |  |  |  |
| S05M126009C0 |  | SW-05 ; 2nd Fix, Inst of Equipment (DB, TR, SG) (Mech RM) | 54d | 2012-02-09 | 2012-04-12 | S05M123013C0 |  |  |  |  | 128.75d | 38.7d | ELECTRICAL [1747.2 h]; Cost |  |  |  |  |  |  | S05ME26009C0 |  | 20 |  |  |  | SW | C | 05 | M1 | ME | 260 | 09 | 2n | BILL 9 | B09 | S2 | 2F | R00 | ACF04 | E | MEP | 260 |  |  |  |  |
| S05M127020C0 |  | SW-05 ; 2nd Fix, Inst of ELV Equipment (Panels) (Mech RM) | 54d | 2012-02-09 | 2012-04-12 | S05M123013C0 |  |  |  |  | 128.75d | 38.7d | ELECTRICAL [1868.4 h]; Cost |  |  |  |  |  |  | S05ME27020C0 |  |  |  |  |  | SW | C | 05 | M1 | ME | 270 | 20 | 2n | BILL 9 | B09 | S2 | 2F | R00 | ACF04 | E | MEP | 270 |  |  |  |  |
| S05M123015C0 |  | SW-05 ; 2nd Fix, Inst of VCD's/FD's (Mech RM) | 42d | 2012-02-12 | 2012-03-31 | S05M123005C0 |  |  |  |  | 139.25d | 6d | MECHANICAL [1111.2 h]; Cost |  |  |  |  |  |  | S05ME23015C0 |  |  |  |  |  | SW | C | 05 | M1 | ME | 230 | 15 | 2n | BILL 9 | B09 | S2 | 2F | R00 | ACF07 |  | MEP | 230 |  |  |  |  |
| S05M123017C0 |  | SW-05 ; 2nd Fix, Insulation of CHW pipe & Duct (Mech RM) | 48d | 2012-02-12 | 2012-04-07 | S05M123005C0, S05M123019C0 |  |  |  |  | 145.25d | 0d | MECHANICAL [3716.4 h]; Cost |  |  |  |  |  |  | S05ME23017C0 |  |  |  |  |  | SW | C | 05 | M1 | ME | 230 | 17 | 2n | BILL 9 | B09 | S2 | 2F | R00 | ACF07 |  | MEP | 230 |  |  |  |  |
| S05M109903C0 |  | SW-05 ; Wall - Final Paint (Mech RM) | 24d | 2012-02-19 | 2012-03-17 | S05M109901C0 |  |  |  |  | 217.25d | 0d | WALL PAINT [342 h]; WALL PAINT [426 m2]; Cost |  |  |  |  |  |  | S05ME09903C0 |  |  |  |  |  | SW | C | 05 | M1 | PA | 099 | 03 |  | BILL 9 | B09 | S2 | 02 | R00 | ACF06 |  |  | 099 |  | 329 | 1470 |  |
| S05M126019C0 |  | SW-05 ; Final Fix, Inst of Light fittings (Mech RM) | 42d | 2012-02-19 | 2012-04-07 | S05M109901C0 |  |  |  |  | 217.25d | 127.2d | ELECTRICAL [4813.2 h]; Cost |  |  |  |  |  |  | S05ME26019C0 |  |  |  |  |  | SW | C | 05 | M1 | ME | 260 | 19 | FF | BILL 9 | B09 | S2 | FF | R00 | ACF07 |  | MEP | 260 |  |  |  |  |
| S05M109601C0 |  | SW-05 ; Floor Finishes (Mech RM) | 34d | 2012-02-27 | 2012-04-07 | S05M107101C0, S05M109205C0 |  |  |  |  | 187d | 0d | ASSORTED FLOOR FINISH [12640 h]; ASSORTED FLOOR FINISH [7018 m2]; Cost |  |  |  |  |  |  | S05ME09601C0 |  |  |  |  |  | SW | C | 05 | M1 | FF | 096 | 01 |  | BILL 9 | B09 | S2 | 01 | R00 | ACF06 |  |  | FF |  | 326 | 1501 |  |
| S05M121121C0 |  | SW-05 ; Final Fix, Inst of Sprinklers head (Mech RM) | 36d | 2012-03-11 | 2012-04-21 | S05M121115C0 |  |  |  |  | 205.25d | 115.2d | MECHANICAL [237.6 h]; Cost |  |  |  |  |  |  | S05ME21121C0 |  |  |  |  |  | SW | C | 05 | M1 | ME | 211 | 21 | FF | BILL 9 | B09 | S2 | FF | R00 | ACF07 |  | MEP | 211 |  |  |  |  |
| S05M126017C0 |  | SW-05 ; Final Fix, Inst of Switch/Sockets (Mech RM) | 12d | 2012-03-18 | 2012-03-31 | S05M109901C0, S05M109903C0 |  |  |  |  | 223.25d | 133.2d | ELECTRICAL [256.8 h]; Cost |  |  |  |  |  |  | S05ME26017C0 |  |  |  |  |  | SW | C | 05 | M1 | ME | 260 | 17 | FF | BILL 9 | B09 | S2 | FF | R00 | ACF07 |  | MEP | 260 |  |  |  |  |
| S05M126007C0 |  | SW-05 ; 2nd Fix, Cable Pulling (Mech RM) | 42d | 2012-03-31 | 2012-05-19 | S05M126011C0 |  |  |  |  | 103.55d | 7.5d | ELECTRICAL [1532.4 h]; Cost |  |  |  |  |  |  | S05ME26007C0 |  |  |  |  |  | SW | C | 05 | M1 | ME | 260 | 07 | 2n | BILL 9 | B09 | S2 | 2F | R00 | ACF07 |  | MEP | 260 |  |  |  |  |
| S05M127001C0 |  | SW-05 ; 1st Fix, Wiring/ Cabling work (Mech RM) | 48d | 2012-04-02 | 2012-05-28 | S05M126001C0, S05M126011C0, S05M127010C0 |  |  |  |  | 90.05d | 0d | ELECTRICAL [241.2 h]; Cost |  |  |  |  |  |  | S05ME27001C0 |  |  |  |  |  | SW | C | 05 | M1 | ME | 270 | 01 | 1S | BILL 9 | B09 | S2 | 1F | R00 | ACF04 |  | MEP | 270 | M1F |  |  |  |
| S05M108105C0 |  | SW-05 ; Metal Doors (Mech RM) | 17.88d | 2012-04-07 | 2012-04-28 | S05M108101C0, S05M109901C0, S05M109601C0 |  |  |  |  | 187d | 0d | METAL DOORS [270 h]; METAL DOORS [27 no]; Cost |  |  |  |  |  |  | S05ME08105C0 |  |  |  |  |  | SW | C | 05 | M1 | DO | 081 | 05 |  | BILL 9 | B09 | S2 | DR | R00 | ACF06 |  |  | 081 |  | 317 | 1466 | 08 |
| S05M122003C0 |  | SW-05 ; Final Fix, Inst of All drain (Mech RM) | 18d | 2012-04-07 | 2012-04-28 | S05M109601C0, S05M109903C0 |  |  |  |  | 199.75d | 109.7d | PLUMBING [310.8 h]; Cost |  |  |  |  |  |  | S05ME22003C0 |  |  |  |  |  | SW | C | 05 | M1 | ME | 220 | 03 | FF | BILL 9 | B09 | S2 | FF | R00 | ACF07 |  | MEP | 220 |  |  |  |  |
| S05M123023C0 |  | SW-05 ; Final Fix, Inst of Flexible Duct & Plenum boxes (Mech RM) | 36d | 2012-04-08 | 2012-05-19 | S05M123015C0, S05M123017C0 |  |  |  |  | 145.25d | 0d | MECHANICAL [166.8 h]; Cost |  |  |  |  |  |  | S05ME23023C0 |  |  |  |  |  | SW | C | 05 | M1 | ME | 230 | 23 | FF | BILL 9 | B09 | S2 | FF | R00 | ACF07 |  | MEP | 230 |  |  |  |  |
| S05M123009C0 |  | SW-05 ; 2nd Fix, Inst of VAV'S CHW connection (Mech RM) | 42d | 2012-04-12 | 2012-05-31 | S05M123011C0 |  |  |  |  | 134.75d | 44.7d | MECHANICAL [1018.8 h]; Cost |  |  |  |  |  |  | S05ME23009C0 |  |  |  |  | 0 | SW | C | 05 | M1 | ME | 230 | 09 | 2n | BILL 9 | B09 | S2 | 2F | R00 | ACF07 |  | MEP | 230 |  |  |  |  |
| S05M108709C0 |  | SW-05 ; Ironmongery (Mech RM) | 23.88d | 2012-04-28 | 2012-05-26 | S05M108105C0 |  |  |  |  | 187d | 96.95d | IRONMONGERY [330 h]; IRONMONGERY [33 no]; Cost |  |  |  |  |  |  | S05ME08709C0 |  |  |  |  |  | SW | C | 05 | M1 | DO | 087 | 09 |  | BILL 9 | B09 | S2 | IM | R00 | ACF06 |  |  | 087 |  | 322 | 1467 | 08 |
| S05M123021C0 |  | SW-05 ; Final Fix, Inst of Grilles & Diffusers (Mech RM) | 36d | 2012-05-20 | 2012-07-01 | S05M123023C0 |  |  |  |  | 145.25d | 55.2d | MECHANICAL [835.2 h]; Cost |  |  |  |  |  |  | S05ME23021C0 |  |  |  |  |  | SW | C | 05 | M1 | ME | 230 | 21 | FF | BILL 9 | B09 | S2 | FF | R00 | ACF07 |  | MEP | 230 |  |  |  |  |
| S05M126005C0 |  | SW-05 ; 2nd Fix, Wiring for Power/Lighting/Emergency (Mech RM) | 42d | 2012-05-28 | 2012-07-17 | S05M126001C0, S05M126007C0, S05M126011C0, S05M127001C0, S05M127010C0 |  |  |  |  | 96.05d | 0d | ELECTRICAL [241.2 h]; Cost |  |  |  |  |  |  | S05ME26005C0 |  |  |  |  |  | SW | C | 05 | M1 | ME | 260 | 05 | 2n | BILL 9 | B09 | S2 | 2F | R00 | ACF07 |  | MEP | 260 |  |  |  |  |
| S05M127003C0 |  | SW-05 ; Final Fix, BMS connection work to Equipment (Mech RM) | 48d | 2012-05-28 | 2012-07-24 | S05M121117C0, S05M123011C0, S05M123013C0, S05M123015C0, S05M126009C0, S05M127001C0, S05M127020C0 |  |  |  |  | 90.05d | 0d | ELECTRICAL [13516.8 h]; Cost |  |  |  |  |  |  | S05ME27003C0 |  |  |  |  |  | SW | C | 05 | M1 | ME | 270 | 03 | FF | BILL 9 | B09 | S2 | FF | R00 | ACF07 |  | MEP | 270 |  |  |  |  |
| S05M126013C0 |  | SW-05 ; Final Fix, Termination & Gladding of Cables (Mech RM) | 36d | 2012-07-17 | 2012-08-30 | S05M109205C0, S05M126005C0 |  |  |  |  | 96.05d | 6d | ELECTRICAL [85.2 h]; Cost |  |  |  |  |  |  | S05ME26013C0 |  |  |  |  |  | SW | C | 05 | M1 | ME | 260 | 13 | FF | BILL 9 | B09 | S2 | FF | R00 | ACF07 |  | MEP | 260 |  |  |  |  |
| S05M127030C0 |  | SW-05 ; Final Fix, Inst of ELV devise (Detector/Speaker) (Mech RM) | 36d | 2012-07-24 | 2012-09-06 | S05M109901C0, S05M123009C0, S05M127020C0, S05M127003C0 |  |  |  |  | 90.05d | 0d | ELECTRICAL [1348.8 h]; Cost |  |  |  |  |  |  | S05ME27030C0 |  |  |  |  |  | SW | C | 05 | M1 | ME | 270 | 30 | FF | BILL 9 | B09 | S2 | FF | R00 | ACF07 |  | MEP | 270 |  |  |  |  |

| ID | WBS | Activity | Duration | Start | Finish | Predecessors | Complete | Remaining | Planned start | Planned finish | Total float | Free float | Resources | Cost | Actual cost | change id | CCAD BUILDING(SET) | CCAD PHASE(SET) | CCAD FLOOR(SET) | CCAD ZONE(SET) | CCAD WORK(SET) | CCAD SECTION(SET) | CCAD SERIAL No.(SET) | CCAD CBS(SET) | CCAD BILL(SET) | CCAD HANDOVER(SET) | CCAD TAG(SET) | CCAD REV(SET) | CCADACF (SET) | CCAD SSCF | RENZ % COMPLETE | CCAD SUB ZONE MEP(SET) | CCAD CSA | Act Selector % | user_number8 | user_integer1 | user_integer2 | user_number7 | July2011 Target% Complete | P_811 | P_711 | U% | CCAD MEQ | Change Order # | NEW ACTIVITY ID | CCAD DIVISION(SET) |
| --- | --- | --- | --- | --- | --- | --- | --- | --- | --- | --- | --- | --- | --- | --- | --- | --- | --- | --- | --- | --- | --- | --- | --- | --- | --- | --- | --- | --- | --- | --- | --- | --- | --- | --- | --- | --- | --- | --- | --- | --- | --- | --- | --- | --- | --- | --- |
|  | 10 | **Precommissioning Tesing & snagging (Mech-1)** |  | 2012-09-06 | 2012-10-13 |  |  |  |  |  |  |  |  |  |  |  |  |  |  |  |  |  |  |  |  |  |  |  |  |  |  |  |  |  |  |  |  |  |  |  |  |  |  |  |  |  |
| S05TS01801C0 |  | SW-05 ; MEP de-snag, FIREM sign-off | 11d | 2012-09-06 | 2012-09-19 | S05M121123C0, S05M126015C0, S05M126017C0, S05M126019C0, S05M122003C0, S05M123023C0, S05M127030C0, S05M127003C0, S05M121121C0, S05M123021C0, S05M126013C0 |  |  |  |  | 90.05d | 0d | TESTING & COMMISSIONING [2040 h]; Cost |  |  | S05TS01801C0 | SW | C | 05 | TS | SC | 018 | 01 | BILL 9 | B09 | S2 | 01 | R00 | ACF07 | 018 |  |  |  |  |  |  |  |  |  |  |  |  |  |  |  |  |
| S05TS01804C0 |  | SW-05 ; Touch-up & Clean / JV inspection /CIR /De-snag | 14.25d | 2012-09-19 | 2012-10-06 | S05M108709C0, S05M109601C0, S05M109903C0, S05TS01801C0 |  |  |  |  | 90.05d | 0d | TESTING & COMMISSIONING [128 h]; Cost |  |  | S05TS01802C0 | SW | C | 05 | TS | SC | 018 | 02 | BILL 9 | B09 | S2 | 02 | R00 | ACF07 | 018 |  |  |  |  |  |  |  |  |  |  |  |  |  |  |  |  |
| S05TS01807C0 |  | SW-05 ; Consultant's final de-snag inspection | 6.25d | 2012-10-06 | 2012-10-13 | S05TS01804C0, SAFTS01803C0 |  |  |  |  | 90.05d | 0d | Labor General [0.5 h]; Cost |  |  | S05TS01803C0 | SW | C | 05 | TS | SC | 018 | 03 | BILL 9 | B09 | S2 | 03 | R00 | ACF07 | 018 |  |  |  |  |  |  |  |  |  |  |  |  |  |  |  |  |
|  | 03 | **Mech-2** |  | 2011-05-10 | 2012-10-20 |  |  |  |  |  |  |  |  |  |  |  |  |  |  |  |  |  |  |  |  |  |  |  |  |  |  |  |  |  |  |  |  |  |  |  |  |  |  |  |  |  |
| S05M223001C0 |  | SW-05 ; 1st Fix, Inst. of Supports for MEP (Mech RM-2) | 30d | 2011-05-10 A | 2011-05-25 A | S05S207807C0, S05S307807C0 | 100% |  | 2011-07-21 | 2011-08-25 |  |  | MECHANICAL [933.6 h]; Cost [30275.7 AED] | 30,275.67 | 30,275.67 | S05M223001C0 | SW | C | 05 | M2 | ME | 230 | 01 | BILL 9 | B09 | S2 | 1F | R00 | ACF04 | 230 | 100 | 1S | MEP | M1F |  |  |  |  |  |  |  |  |  |  |  |  |
| S05M223013C0 |  | SW-05 ; 2nd Fix, Inst of Equipment (AHU) (Mech RM-2) | 90d | 2011-05-15 A | 2012-02-09 | S05M209201C0 FS+30d, S05M222006C0 FF, S05M222011C0 FF, S05S107807C0, S05S207807C0, S05S207807C0 FF, S05S307807C0 | 35% | 58.5d | 2011-09-04 | 2011-12-24 | 96.3d | 0d | MECHANICAL [13884 h]; Cost [3159394 AED] | 3,159,394.42 | 1,105,788.05 | S05M223013C0 | SW | C | 05 | M2 | ME | 230 | 13 | BILL 9 | B09 | S2 | 2F | R00 | ACF04 | 230 | 30 | 2n | MEP |  | 0 | 0 | 0 | 0 | 100 | 35 | 30 | 35 | H |  |  |  |
| S05M209201C0 |  | SW-05 ; Metal Studs (Mech RM-2) | 45d | 2011-07-10 A | 2011-10-20 | S05M109201C0 SS+6d, S05M223001C0 | 60% | 18d | 2011-07-14 | 2011-09-07 | 50.5d | 0d | PARTITIONS [3147 h]; PARTITIONS - Metal Studs [200 m]; Cost |  |  | S05M209201C0 | SW | C | 05 | M2 | PT | 092 | 01 | BILL 9 | B09 | S2 | 1F | R00 | ACF06 | 092 |  |  | GP | PMS | 0 | 0 | 0 | 0 |  | 45 | 40 | 60 |  |  |  |  |
| S05M222011C0 |  | SW-05 ; 1st Fix, Inst of Drainage pipe (Mech RM-2) | 60d | 2011-07-10 A | 2011-12-04 | S05M223001C0, S05M226001C0 SS+14d | 15% | 51d | 2011-07-17 | 2011-09-27 | 148.8d | 0d | PLUMBING [310.8 h]; Cost [16770.4 AED] | 16,770.39 | 2,515.56 | S05M222011C0 | SW | C | 05 | M2 | ME | 220 | 11 | BILL 9 | B09 | S2 | 1F | R00 | ACF04 | 220 |  | 1S | MEP | M1F | 0 | 0 | 0 | 0 | 30 | 10 | 5 | 15 |  |  |  |  |
| S05M221111C0 |  | SW-05 ; 1st Fix, Inst of Sprinkler main pipe (Mech RM-2) | 60d | 2011-08-10 A | 2011-12-13 | S05M222006C0 SS+14d, S05M223001C0 | 25% | 45d | 2011-09-04 | 2011-11-15 | 185.5d | 0d | MECHANICAL [793.2 h]; Cost [43268 AED] | 43,267.97 | 10,816.99 | S05M221111C0 | SW | C | 05 | M2 | ME | 211 | 11 | BILL 9 | B09 | S2 | 1F | R00 | ACF04 | 211 |  | 1S | MEP | M1F | 0 | 0 | 0 | 0 | 50 | 20 | 0 | 25 |  |  |  |  |
| S05M221119C0 |  | SW-05 ; 1st Fix, Inst of Sprinkler branch pipe (Mech RM-2) | 60d | 2011-08-10 A | 2011-12-13 | S05M221111C0 SS | 25% | 45d | 2011-11-28 | 2012-02-08 | 242.5d | 40d | MECHANICAL [682.8 h]; Cost [37306.8 AED] | 37,306.8 | 9,326.7 | S05M221119C0 | SW | C | 05 | M2 | ME | 211 | 19 | BILL 9 | B09 | S2 | 1F | R00 | ACF04 | 211 |  | 1S | MEP | M1F | 0 | 0 | 0 | 0 |  | 20 | 0 | 25 |  |  |  |  |
| S05M226001C0 |  | SW-05 ; 1st Fix, Inst of Trunking/Conduiting (Mech RM-2) | 48d | 2011-09-05 A | 2011-11-23 | S05M223001C0 | 10% | 43.2d | 2011-09-01 | 2011-10-26 | 148.8d | 0d | ELECTRICAL [447.6 h]; Cost [24105.1 AED] | 24,105.11 | 2,410.51 | S05M226001C0 | SW | C | 05 | M2 | ME | 260 | 01 | BILL 9 | B09 | S2 | 1F | R00 | ACF04 | 260 |  | 1S | MEP | M1F |  |  |  |  |  |  |  | 10 |  |  |  |  |
| S05M226011C0 |  | SW-05 ; 1st Fix, Inst of Cable Tray (Mech RM-2) | 48d | 2011-09-05 A | 2012-03-31 | S05M223013C0, S05M221111C0 FF | 10% | 43.2d | 2011-11-23 | 2012-01-21 | 97.8d | 0d | ELECTRICAL [231.6 h]; Cost [13047.4 AED] | 13,047.37 | 1,304.74 | S05M226011C0 | SW | C | 05 | M2 | ME | 260 | 11 | BILL 9 | B09 | S2 | 1F | R00 | ACF04 | 260 |  | 1S | MEP | M1F |  |  |  |  |  |  |  |  |  |  |  |  |
| S05M227010C0 |  | SW-05 ; 1st Fix, Inst of Trunking for ELV system (Mech RM-2) | 48d | 2011-09-05 A | 2012-04-02 | S05M223005C0 | 10% | 43.2d | 2011-11-24 | 2012-01-23 | 96.3d | 0d | ELECTRICAL [991.2 h]; Cost [51056.8 AED] | 51,056.81 | 5,105.68 | S05M227010C0 | SW | C | 05 | M2 | ME | 270 | 10 | BILL 9 | B09 | S2 | 1F | R00 | ACF04 | 270 |  | 1S | MEP | M1F |  |  |  |  |  |  |  | 10 |  |  |  |  |
| S05M222006C0 |  | SW-05 ; 1st Fix, Inst of Water supply pipe (Mech RM-2) | 54d | 2011-10-01 | 2011-12-07 | S05M222011C0 SS+10d, S05M223001C0 |  |  |  |  | 148.8d | 0d | PLUMBING [1688.4 h]; Cost |  |  | S05M222006C0 | SW | C | 05 | M2 | ME | 220 | 06 | BILL 9 | B09 | S2 | 1F | R00 | ACF04 | 220 |  | 1S | MEP | M1F |  |  |  |  | 30 |  |  |  |  |  |  |  |
| S05M223019C0 |  | SW-05 ; 1st Fix, Inst of CHW pipe (Mech RM-2) | 54d | 2011-10-17 | 2011-12-24 | S05M221111C0 SS+12d, S05M223001C0 |  |  |  |  | 185.5d | 38.5d | MECHANICAL [1687.2 h]; Cost |  |  | S05M223019C0 | SW | C | 05 | M2 | ME | 230 | 19 | BILL 9 | B09 | S2 | 1F | R00 | ACF04 | 230 |  | 1S | MEP | M1F |  |  |  |  | 30 |  |  |  |  |  |  |  |
| S05M209203C0 |  | SW-05 ; Partitions 1st face (Mech RM-2) | 45d | 2011-10-22 | 2011-12-18 | S05M209201C0 |  |  |  |  | 202.5d | 0d | PARTITIONS [200 m]; PARTITIONS [2466 h]; Cost |  |  | S05M209203C0 | SW | C | 05 | M2 | PT | 092 | 03 | BILL 9 | B09 | S2 | 2F | R00 | ACF06 | 092 |  |  | GP | P1F |  |  |  |  |  |  |  |  |  | 314 | 1463 |  |
| S05M208101C0 |  | SW-05 ; Metal Door Frames (Mech RM-2) | 18d | 2011-11-12 | 2011-12-04 | S05M209201C0, GNHE08101C0 FS+69d, S05M108101C0 SS+3d |  |  |  |  | 35.5d | 0d | METAL DOORS [48 h]; Cost |  |  | S05M208101C0 | SW | C | 05 | M2 | DO | 081 | 01 | BILL 9 | B09 | S2 | DF | R00 | ACF06 | 081 |  |  |  |  |  |  |  |  |  |  |  |  |  | 316 | 1465 | 08 |
| S05M223005C0 |  | SW-05 ; 1st Fix, Inst of Ducting (Mech RM-2) | 60d | 2011-11-30 | 2012-02-11 | S05M223001C0, S05M223013C0 SS+12d |  |  |  |  | 96.3d | 0d | MECHANICAL [6650.4 h]; Cost |  |  | S05M223005C0 | SW | C | 05 | M2 | ME | 230 | 05 | BILL 9 | B09 | S2 | 1F | R00 | ACF04 | 230 |  | 1S | MEP | M1F |  |  |  |  | 20 |  |  |  |  |  |  |  |
| S05M209205C0 |  | SW-05 ; Partitions Closing (Mech RM-2) | 36d | 2011-12-19 | 2012-01-30 | S05M209201C0, S05M209203C0, S05M222006C0, S05M222011C0, SAFOA09212C1 FF, S05M208101C0 FF |  |  |  |  | 202.5d | 0d | PARTITIONS [200 m]; PARTITIONS [3165 h]; Cost |  |  | S05M209205C0 | SW | C | 05 | M2 | PT | 092 | 05 | BILL 9 | B09 | S2 | FF | R00 | ACF06 | 092 |  |  | GP | P2F |  |  |  |  |  |  |  |  |  | 315 | 1464 |  |
| S05M209901C0 |  | SW-05 ; Wall Prime & 1st coat (Mech RM-2) | 24d | 2012-01-31 | 2012-02-28 | S05M209205C0 |  |  |  |  | 214.5d | 0d | WALL PAINT [888 h]; WALL PAINT [1108 m2]; Cost |  |  | S05M209901C0 | SW | C | 05 | M2 | PA | 099 | 01 | BILL 9 | B09 | S2 | 01 | R00 | ACF06 | 099 |  |  |  |  |  |  |  |  |  |  |  |  |  | 328 | 1469 |  |
| S05M221115C0 |  | SW-05 ; 2nd Fix, Inst of Sprinkler droppers (Mech RM-2) | 42d | 2012-01-31 | 2012-03-20 | S05M209205C0, S05M221119C0 |  |  |  |  | 202.5d | 0d | MECHANICAL [1309.2 h]; Cost |  |  | S05M221115C0 | SW | C | 05 | M2 | ME | 211 | 15 | BILL 9 | B09 | S2 | 2F | R00 | ACF07 | 211 |  | 2n | MEP |  |  |  |  |  |  |  |  |  |  |  |  |  |
| S05M221123C0 |  | SW-05 ; Final Fix, Inst of Fire Extinguishers/FHC (Mech RM-2) | 36d | 2012-01-31 | 2012-03-13 | S05M209205C0 |  |  |  |  | 244.5d | 148.2d | MECHANICAL [2241.6 h]; Cost |  |  | S05M221123C0 | SW | C | 05 | M2 | ME | 211 | 23 | BILL 9 | B09 | S2 | FF | R00 | ACF07 | 211 |  | FF | MEP |  |  |  |  |  |  |  |  |  |  |  |  |  |
| S05M226015C0 |  | SW-05 ; Final Fix, Inst of Ceiling rose (Mech RM-2) | 36d | 2012-01-31 | 2012-03-13 | S05M209205C0 |  |  |  |  | 244.5d | 148.2d | ELECTRICAL [36 h]; Cost |  |  | S05M226015C0 | SW | C | 05 | M2 | ME | 260 | 15 | BILL 9 | B09 | S2 | FF | R00 | ACF07 | 260 |  | FF | MEP |  |  |  |  |  |  |  |  |  |  |  |  |  |
| S05M207101C0 |  | SW-05 ; Waterproofing (Mech RM-2) | 15d | 2012-02-09 | 2012-02-27 | S05M223013C0 |  |  |  |  | 185.12d | 0d | THERMAL & MOISTURE [176 h]; THERMAL & MOISTURE [1167 m2]; Cost |  |  | I05ME09901C0 | SW | C | 05 | M2 | FF | 071 | 01 | BILL 9 | B09 | S2 | 01 | R00 | ACF03 | 071 |  |  |  |  |  |  |  |  |  |  |  |  |  | 328 | 1469 |  |
| S05M221117C0 |  | SW-05 ; 2nd Fix, Inst of Zone Control Valve (Mech RM-2) | 42d | 2012-02-09 | 2012-03-29 | S05M223013C0, S05M223019C0 |  |  |  |  | 147d | 50.7d | MECHANICAL [604.8 h]; Cost |  |  | S05M221117C0 | SW | C | 05 | M2 | ME | 211 | 17 | BILL 9 | B09 | S2 | 2F | R00 | ACF07 | 211 |  | 2n | MEP |  |  |  |  |  |  |  |  |  |  |  |  |  |
| S05M223011C0 |  | SW-05 ; 2nd Fix, Inst of Equipment (FCU,FAN,PUMP) (Mech RM-2) | 54d | 2012-02-09 | 2012-04-12 | S05M223013C0 |  |  |  |  | 135d | 0d | MECHANICAL [1372.8 h]; Cost |  |  | S05M223011C0 | SW | C | 05 | M2 | ME | 230 | 11 | BILL 9 | B09 | S2 | 2F | R00 | ACF04 | 230 |  | 2n | MEP |  |  |  |  |  |  |  |  |  | H |  |  |  |
| S05M226009C0 |  | SW-05 ; 2nd Fix, Inst of Equipment (DB, TR, SG) (Mech RM-2) | 54d | 2012-02-09 | 2012-04-12 | S05M223013C0 |  |  |  |  | 135d | 38.7d | ELECTRICAL [1747.2 h]; Cost |  |  | S05M226009C0 | SW | C | 05 | M2 | ME | 260 | 09 | BILL 9 | B09 | S2 | 2F | R00 | ACF04 | 260 |  | 2n | MEP |  |  |  |  |  |  |  |  |  | E |  |  |  |
| S05M227020C0 |  | SW-05 ; 2nd Fix, Inst of ELV Equipment (Panels) (Mech RM-2) | 54d | 2012-02-09 | 2012-04-12 | S05M223013C0 |  |  |  |  | 135d | 38.7d | ELECTRICAL [1868.4 h]; Cost |  |  | S05M227020C0 | SW | C | 05 | M2 | ME | 270 | 20 | BILL 9 | B09 | S2 | 2F | R00 | ACF04 | 270 |  | 2n | MEP |  |  |  |  |  |  |  |  |  | E |  |  |  |
| S05M223015C0 |  | SW-05 ; 2nd Fix, Inst of VCD's/FD's (Mech RM-2) | 42d | 2012-02-12 | 2012-03-31 | S05M223005C0 |  |  |  |  | 145.5d | 6d | MECHANICAL [1111.2 h]; Cost |  |  | S05M223015C0 | SW | C | 05 | M2 | ME | 230 | 15 | BILL 9 | B09 | S2 | 2F | R00 | ACF07 | 230 |  | 2n | MEP |  |  |  |  |  |  |  |  |  |  |  |  |  |
| S05M223017C0 |  | SW-05 ; 2nd Fix, Insulation of CHW pipe & Duct (Mech RM-2) | 48d | 2012-02-12 | 2012-04-07 | S05M223005C0, S05M223019C0 |  |  |  |  | 151.5d | 0d | MECHANICAL [3716.4 h]; Cost |  |  | S05M223017C0 | SW | C | 05 | M2 | ME | 230 | 17 | BILL 9 | B09 | S2 | 2F | R00 | ACF07 | 230 |  | 2n | MEP |  |  |  |  |  |  |  |  |  |  |  |  |  |
| S05M209601C0 |  | SW-05 ; Floor Finishes (Mech RM-2) | 36d | 2012-02-27 | 2012-04-09 | S05M207101C0, S05M209205C0 |  |  |  |  | 185.12d | 0d | ASSORTED FLOOR FINISH [17680 h]; ASSORTED FLOOR FINISH [9821 m2]; Cost |  |  | S05M209601C0 | SW | C | 05 | M2 | FF | 096 | 01 | BILL 9 | B09 | S2 | 01 | R00 | ACF06 | FF |  |  |  |  |  |  |  |  |  |  |  |  |  | 326 | 1501 |  |
| S05M209903C0 |  | SW-05 ; Wall - Final Paint (Mech RM-2) | 24d | 2012-02-29 | 2012-03-27 | S05M209901C0 |  |  |  |  | 214.5d | 0d | WALL PAINT [479 h]; WALL PAINT [597 m2]; Cost |  |  | S05M209903C0 | SW | C | 05 | M2 | PA | 099 | 03 | BILL 9 | B09 | S2 | 02 | R00 | ACF06 | 099 |  |  |  |  |  |  |  |  |  |  |  |  |  | 329 | 1470 |  |
| S05M226019C0 |  | SW-05 ; Final Fix, Inst of Light fittings (Mech RM-2) | 42d | 2012-02-29 | 2012-04-17 | S05M209901C0 |  |  |  |  | 214.5d | 118.2d | ELECTRICAL [4813.2 h]; Cost |  |  | S05M226019C0 | SW | C | 05 | M2 | ME | 260 | 19 | BILL 9 | B09 | S2 | FF | R00 | ACF07 | 260 |  | FF | MEP |  |  |  |  |  |  |  |  |  |  |  |  |  |
| S05M221121C0 |  | SW-05 ; Final Fix, Inst of Sprinklers head (Mech RM-2) | 36d | 2012-03-21 | 2012-05-01 | S05M221115C0 |  |  |  |  | 202.5d | 106.2d | MECHANICAL [237.6 h]; Cost |  |  | S05M221121C0 | SW | C | 05 | M2 | ME | 211 | 21 | BILL 9 | B09 | S2 | FF | R00 | ACF07 | 211 |  | FF | MEP |  |  |  |  |  |  |  |  |  |  |  |  |  |
| S05M226017C0 |  | SW-05 ; Final Fix, Inst of Switch/Sockets (Mech RM-2) | 12d | 2012-03-28 | 2012-04-10 | S05M209901C0, S05M209903C0 |  |  |  |  | 220.5d | 124.2d | ELECTRICAL [256.8 h]; Cost |  |  | S05M226017C0 | SW | C | 05 | M2 | ME | 260 | 17 | BILL 9 | B09 | S2 | FF | R00 | ACF07 | 260 |  | FF | MEP |  |  |  |  |  |  |  |  |  |  |  |  |  |
| S05M226007C0 |  | SW-05 ; 2nd Fix, Cable Pulling (Mech RM-2) | 42d | 2012-03-31 | 2012-05-19 | S05M226011C0 |  |  |  |  | 109.8d | 7.5d | ELECTRICAL [1532.4 h]; Cost |  |  | S05M226007C0 | SW | C | 05 | M2 | ME | 260 | 07 | BILL 9 | B09 | S2 | 2F | R00 | ACF07 | 260 |  | 2n | MEP |  |  |  |  |  |  |  |  |  |  |  |  |  |
| S05M227001C0 |  | SW-05 ; 1st Fix, Wiring/ Cabling work (Mech RM-2) | 48d | 2012-04-02 | 2012-05-28 | S05M226001C0, S05M226011C0, S05M227010C0 |  |  |  |  | 96.3d | 0d | ELECTRICAL [241.2 h]; Cost |  |  | S05M227001C0 | SW | C | 05 | M2 | ME | 270 | 01 | BILL 9 | B09 | S2 | 1F | R00 | ACF04 | 270 |  | 1S | MEP | M1F |  |  |  |  |  |  |  |  |  |  |  |  |
| S05M223023C0 |  | SW-05 ; Final Fix, Inst of Flexible Duct & Plenum boxes (Mech RM-2) | 36d | 2012-04-08 | 2012-05-19 | S05M223015C0, S05M223017C0 |  |  |  |  | 151.5d | 0d | MECHANICAL [166.8 h]; Cost |  |  | S05M223023C0 | SW | C | 05 | M2 | ME | 230 | 23 | BILL 9 | B09 | S2 | FF | R00 | ACF07 | 230 |  | FF | MEP |  |  |  |  |  |  |  |  |  |  |  |  |  |
| S05M208105C0 |  | SW-05 ; Metal Doors (Mech RM-2) | 20d | 2012-04-09 | 2012-05-02 | S05M208101C0, S05M209901C0, S05M209601C0 |  |  |  |  | 185.12d | 0d | METAL DOORS [380 h]; METAL DOORS [38 no]; Cost |  |  | S05M208105C0 | SW | C | 05 | M2 | DO | 081 | 05 | BILL 9 | B09 | S2 | DR | R00 | ACF06 | 081 |  |  |  |  |  |  |  |  |  |  |  |  |  | 317 | 1466 | 08 |
| S05M222003C0 |  | SW-05 ; Final Fix, Inst of All drain (Mech RM-2) | 18d | 2012-04-09 | 2012-04-30 | S05M209601C0, S05M209903C0 |  |  |  |  | 204d | 107.7d | PLUMBING [310.8 h]; Cost |  |  | S05M222003C0 | SW | C | 05 | M2 | ME | 220 | 03 | BILL 9 | B09 | S2 | FF | R00 | ACF07 | 220 |  | FF | MEP |  |  |  |  |  |  |  |  |  |  |  |  |  |
| S05M223009C0 |  | SW-05 ; 2nd Fix, Inst of VAV'S CHW connection (Mech RM-2) | 42d | 2012-04-12 | 2012-05-31 | S05M223011C0 |  |  |  |  | 141d | 44.7d | MECHANICAL [1018.8 h]; Cost |  |  | S05M223009C0 | SW | C | 05 | M2 | ME | 230 | 09 | BILL 9 | B09 | S2 | 2F | R00 | ACF07 | 230 |  | 2n | MEP |  |  |  |  |  |  |  |  | 0 |  |  |  |  |
| S05M208709C0 |  | SW-05 ; Ironmongery (Mech RM-2) | 27.88d | 2012-05-02 | 2012-06-04 | S05M208105C0 |  |  |  |  | 185.12d | 88.83d | IRONMONGERY [460 h]; IRONMONGERY [46 no]; Cost |  |  | S05M208709C0 | SW | C | 05 | M2 | DO | 087 | 09 | BILL 9 | B09 | S2 | IM | R00 | ACF06 | 087 |  |  |  |  |  |  |  |  |  |  |  |  |  | 322 | 1467 | 08 |
| S05M223021C0 |  | SW-05 ; Final Fix, Inst of Grilles & Diffusers (Mech RM-2) | 36d | 2012-05-20 | 2012-07-01 | S05M223023C0 |  |  |  |  | 151.5d | 55.2d | MECHANICAL [835.2 h]; Cost |  |  | S05M223021C0 | SW | C | 05 | M2 | ME | 230 | 21 | BILL 9 | B09 | S2 | FF | R00 | ACF07 | 230 |  | FF | MEP |  |  |  |  |  |  |  |  |  |  |  |  |  |
| S05M226005C0 |  | SW-05 ; 2nd Fix, Wiring for Power/Lighting/Emergency (Mech RM-2) | 42d | 2012-05-28 | 2012-07-17 | S05M226001C0, S05M226007C0, S05M226011C0, S05M227001C0, S05M227010C0 |  |  |  |  | 102.3d | 0d | ELECTRICAL [241.2 h]; Cost |  |  | S05M226005C0 | SW | C | 05 | M2 | ME | 260 | 05 | BILL 9 | B09 | S2 | 2F | R00 | ACF07 | 260 |  | 2n | MEP |  |  |  |  |  |  |  |  |  |  |  |  |  |
| S05M227003C0 |  | SW-05 ; Final Fix, BMS connection work to Equipment (Mech RM-2) | 48d | 2012-05-28 | 2012-07-24 | S05M221117C0, S05M223011C0, S05M223013C0, S05M223015C0, S05M226009C0, S05M227001C0, S05M227020C0 |  |  |  |  | 96.3d | 0d | ELECTRICAL [13516.8 h]; Cost |  |  | S05M227003C0 | SW | C | 05 | M2 | ME | 270 | 03 | BILL 9 | B09 | S2 | FF | R00 | ACF07 | 270 |  | FF | MEP |  |  |  |  |  |  |  |  |  |  |  |  |  |
| S05M226013C0 |  | SW-05 ; Final Fix, Termination & Gladding of Cables (Mech RM-2) | 36d | 2012-07-17 | 2012-08-30 | S05M209205C0, S05M226005C0 |  |  |  |  | 102.3d | 6d | ELECTRICAL [85.2 h]; Cost |  |  | S05M226013C0 | SW | C | 05 | M2 | ME | 260 | 13 | BILL 9 | B09 | S2 | FF | R00 | ACF07 | 260 |  | FF | MEP |  |  |  |  |  |  |  |  |  |  |  |  |  |
| S05M227030C0 |  | SW-05 ; Final Fix, Inst of ELV devise (Detector/Speaker) (Mech RM-2) | 36d | 2012-07-24 | 2012-09-06 | S05M209901C0, S05M223009C0, S05M227020C0, S05M227003C0 |  |  |  |  | 96.3d | 0d | ELECTRICAL [1348.8 h]; Cost |  |  | S05M227030C0 | SW | C | 05 | M2 | ME | 270 | 30 | BILL 9 | B09 | S2 | FF | R00 | ACF07 | 270 |  | FF | MEP |  |  |  |  |  |  |  |  |  |  |  |  |  |

| ID | WBS | Activity | Duration | Start | Finish | Predecessors | Complete | Remaining | Planned start | Planned finish | Total float | Free float | Resources | Cost | Actual cost | change id | CCAD BUILDING(SET) | CCAD PHASE(SET) | CCAD FLOOR(SET) | CCAD ZONE(SET) | CCAD WORK(SET) | CCAD SECTION(SET) | CCAD SERIAL No.(SET) | CCAD CBS(SET) | CCAD BILL(SET) | CCAD HANDOVER(SET) | CCAD TAG(SET) | CCAD REV(SET) | CCADACF (SET) | CCAD SSCF | RENZ % COMPLETE | CCAD SUB ZONE MEP(SET) | CCAD CSA | Act Selector % | user_number8 | user_integer1 | user_integer2 | user_number7 | Change Order # | NEW ACTIVITY ID | Claimed This Month | U% | July2011 Target% Complete | P_811 | P_711 | CCAD DIVISION(SET) | CCAD MEQ |
| --- | --- | --- | --- | --- | --- | --- | --- | --- | --- | --- | --- | --- | --- | --- | --- | --- | --- | --- | --- | --- | --- | --- | --- | --- | --- | --- | --- | --- | --- | --- | --- | --- | --- | --- | --- | --- | --- | --- | --- | --- | --- | --- | --- | --- | --- | --- | --- |
|  | 10 | **Precommissioning Tesing & snagging (Mech-2)** |  | 2012-09-06 | 2012-10-20 |  |  |  |  |  |  |  |  |  |  |  |  |  |  |  |  |  |  |  |  |  |  |  |  |  |  |  |  |  |  |  |  |  |  |  |  |  |  |  |  |  |  |
| S05TS01811C0 |  | SW-05 ; MEP de-snag, FIREM sign-off | 11d | 2012-09-06 | 2012-09-19 | S05M221123C0, S05M226015C0, S05M226017C0, S05M226019C0, S05M222003C0, S05M223023C0, S05M227030C0, S05M227003C0, S05M221121C0, S05M223021C0, S05M226013C0 |  |  |  |  | 96.3d | 0d | TESTING & COMMISSIONING [510 h]; Cost |  |  | S05TS01801C0 | SW | C | 05 | TS | SC | 018 | 01 | BILL 9 | B09 | S2 | 01 | R00 | ACF07 | 018 |  |  |  |  |  |  |  |  |  |  |  |  |  |  |  |  |  |
| S05TS01805C0 |  | SW-05 ; Touch-up & Clean / JV inspection /CIR /De-snag | 14.25d | 2012-09-19 | 2012-10-06 | S05M208709C0, S05M209601C0, S05M209903C0, S05TS01811C0 |  |  |  |  | 96.3d | 6.25d | TESTING & COMMISSIONING [128 h]; Cost |  |  | S05TS01802C0 | SW | C | 05 | TS | SC | 018 | 02 | BILL 9 | B09 | S2 | 02 | R00 | ACF07 | 018 |  |  |  |  |  |  |  |  |  |  |  |  |  |  |  |  |  |
| S05TS01808C0 |  | SW-05 ; Consultant's final de-snag inspection | 6.25d | 2012-10-13 | 2012-10-20 | S05TS01805C0, S05TS01807C0 |  |  |  |  | 90.05d | 0d | Labor General [1 h]; Cost |  |  | S05TS01803C0 | SW | C | 05 | TS | SC | 018 | 03 | BILL 9 | B09 | S2 | 03 | R00 | ACF07 | 018 |  |  |  |  |  |  |  |  |  |  |  |  |  |  |  |  |  |
|  | 04 | **Public Area ( Elev.Lobby & Corridors )** |  | 2011-05-17 | 2012-10-30 |  |  |  |  |  |  |  |  |  |  |  |  |  |  |  |  |  |  |  |  |  |  |  |  |  |  |  |  |  |  |  |  |  |  |  |  |  |  |  |  |  |  |
| S05PA23001C0 |  | SW-05 ; 1st Fix, Inst. of Supports for MEP (Public Area) | 24d | 2011-05-17 A | 2011-05-29 A | S05S107807C0, S05S207807C0, S05S307807C0 | 100% |  | 2011-07-21 | 2011-08-18 |  |  | MECHANICAL [536.4 h]; Cost [30275.7 AED] | 30,275.67 | 30,275.67 | S05PA23001C0 | SW | C | 05 | PA | ME | 230 | 01 | BILL 9 | B09 | S2 | 1F | R00 | ACF04 | 230 | 100 | 1S | MEP | M1F |  |  |  |  |  |  |  |  |  |  |  |  |  |
| S05PA09201C0 |  | SW-05 ; Metal Studs (Public Area) | 45d | 2011-06-11 A | 2011-10-18 | OGNMU00009S0, S05PA23001C0 SS+12d | 65% | 15.75d | 2011-06-11 | 2011-08-02 | 20.62d | 0d | PARTITIONS [2367 h]; PARTITIONS - Metal Studs [171 m]; Cost |  |  | S05PA09201C0 | SW | C | 05 | PA | PT | 092 | 01 | BILL 9 | B09 | S2 | 1F | R00 | ACF06 | 092 |  |  | GP | PMS | 0 | 0 | 0 | 0 | 313 | 944 | 62678.77 | 65 |  |  |  |  |  |
| S05PA22019C0 |  | SW-05 ; 1st Fix, Inst of Drainage pipe (ceiling) (Public Area) | 60d | 2011-07-10 A | 2011-12-04 | S05PA23001C0 | 15% | 51d | 2011-08-14 | 2011-10-25 | 110.85d | 0d | PLUMBING [310.8 h]; Cost [16770.4 AED] | 16,770.39 | 2,515.56 | S05PA22019C0 | SW | C | 05 | PA | ME | 220 | 19 | BILL 9 | B09 | S2 | 1F | R00 | ACF04 | 220 |  | 1S | MEP | M1F | 0 | 0 | 0 | 0 |  |  |  | 15 | 30 | 10 | 5 |  |  |
| S05PA09203C0 |  | SW-05 ; Partitions early wall & 1st face (Public Area) | 45d | 2011-08-10 A | 2011-12-05 | OGNMU00015S0, S05PA09201C0 | 20% | 36d | 2011-10-06 | 2011-12-01 | 113.1d | 12d | PARTITIONS [171 m]; PARTITIONS [1837 h]; Cost |  |  | S05PA09203C0 | SW | C | 05 | PA | PT | 092 | 03 | BILL 9 | B09 | S2 | 2F | R00 | ACF06 | 092 |  |  | GP | P1F | 0 | 0 | 0 | 0 | 314 | 945 |  |  |  | 10 | 0 |  |  |
| S05PA09501C0 |  | SW-05 ; Ceiling Grid and Service Tile (Public Area) | 36d | 2011-08-10 A | 2012-04-02 | S05PA09205C0 SS+15d, S05PA21117C0, S05PA23008C0, S05PA23009C0, S05PA23015C0, S05PA27001C0, S05PA26053C0 FF, S05PA09901C0 | 80% | 7.2d | 2012-04-23 | 2012-06-03 | 91.86d | 0d | CEILING GRID FOR GYPSUM [2313.25 h]; CEILING GRID FOR GYPSUM [197.81 m2]; Cost |  |  | S05PA09501C0 | SW | C | 05 | PA | CE | 095 | 01 | BILL 9 | B09 | S2 | 01 | R00 | ACF06 | 095 |  |  |  |  | 0 | 0 | 0 | 0 | 323 | 952 |  |  |  | 10 | 0 |  |  |
| S05PA21111C0 |  | SW-05 ; 1st Fix, Inst of Sprinkler main pipe (Public Area) | 60d | 2011-08-10 A | 2011-11-21 | S05PA23001C0 | 30% | 42d | 2011-09-29 | 2011-12-13 | 91.86d | 0d | MECHANICAL [793.2 h]; Cost [43268 AED] | 43,267.97 | 12,980.39 | S05PA21111C0 | SW | C | 05 | PA | ME | 211 | 11 | BILL 9 | B09 | S2 | 1F | R00 | ACF04 | 211 |  | 1S | MEP | M1F | 0 | 0 | 0 | 0 |  |  |  | 25 | 30 | 20 | 0 |  |  |
| S05PA21117C0 |  | SW-05 ; 1st Fix, Inst of Sprinkler branch pipe (Public Area) | 60d | 2011-08-10 A | 2011-12-12 | S05PA09201C0 | 30% | 42d | 2011-11-17 | 2012-01-29 | 178.11d | 86.25d | MECHANICAL [682.8 h]; Cost [37306.8 AED] | 37,306.8 | 11,192.04 | S05PA21117C0 | SW | C | 05 | PA | ME | 211 | 17 | BILL 9 | B09 | S2 | 1F | R00 | ACF04 | 211 |  | 1S | MEP | M1F | 0 | 0 | 0 | 0 |  |  |  | 25 |  | 20 | 0 |  |  |
| S05PA09503C0 |  | SW-05 ; Ceiling closure - ACT/Gypsum (Public Area) | 23.25d | 2011-09-05 A | 2012-08-23 | OGNMU00023S0, OGNMU00037S0, S05PA01006C0, S05PA21115C0, S05PA26005C0, S05PA27001C0, S05PA27002C0, SAFOA09511C1 FF, S05PA09701C0, S05PA23021C0, S05PA26007C0 |  | 23.94d | 2012-07-05 | 2012-08-01 | 91.86d | 0d | ASSORTED CEILING FINISH [2179.56 h]; CEILING GYPSUM [64.78 h]; ASSORTED CEILING FINISH [3544 m2]; CEILING GYPSUM [198 m2]; Cost |  |  | S05PA09503C0 | SW | C | 05 | PA | CE | 095 | 03 | BILL 9 | B09 | S2 | 02 | R00 | ACF06 | 095 |  |  |  |  |  |  |  |  | 324 | 953 |  |  |  |  |  |  |  |
| S05PA26001C0 |  | SW-05 ; 1st Fix, Inst of Trunking/Conduiting (Public Area) | 48d | 2011-09-05 A | 2011-11-17 | S05PA23001C0, S05S107807C0, S05S207807C0, S05S307807C0 | 20% | 38.4d | 2011-09-01 | 2011-10-26 | 144.66d | 0d | ELECTRICAL [630 h]; Cost [24105.1 AED] | 24,105.11 | 4,821.02 | S05PA26001C0 | SW | C | 05 | PA | ME | 260 | 01 | BILL 9 | B09 | S2 | 1F | R00 | ACF04 | 260 |  | 1S | MEP | M1F |  |  |  |  |  |  |  |  | 10 |  |  |  |  |
| S05PA26013C0 |  | SW-05 ; 1st Fix, Inst of Cable Tray (Public Area) | 48d | 2011-09-05 A | 2011-11-23 | S05PA23001C0, S05PA27010C0 SS+10d, S05S107807C0, S05S207807C0, S05S307807C0 | 10% | 43.2d | 2011-09-29 | 2011-11-28 | 144.66d | 0d | ELECTRICAL [231.6 h]; Cost [13047.4 AED] | 13,047.37 | 1,304.74 | S05PA26013C0 | SW | C | 05 | PA | ME | 260 | 13 | BILL 9 | B09 | S2 | 1F | R00 | ACF04 | 260 |  | 1S | MEP | M1F |  |  |  |  |  |  |  |  | 30 |  |  |  |  |
| S05PA27010C0 |  | SW-05 ; 1st Fix, Inst of Trunking for ELV system (Public Area) | 48d | 2011-09-05 A | 2011-11-23 | S05PA23001C0, S05PA26001C0 SS+14d, S05S107807C0, S05S207807C0, S05S307807C0 | 10% | 43.2d | 2011-09-18 | 2011-11-15 | 144.66d | 0d | ELECTRICAL [991.2 h]; Cost [51056.8 AED] | 51,056.81 | 5,105.68 | S05PA27010C0 | SW | C | 05 | PA | ME | 270 | 10 | BILL 9 | B09 | S2 | 1F | R00 | ACF04 | 270 |  | 1S | MEP | M1F |  |  |  |  |  |  |  | 10 | 10 |  |  |  |  |
| S05PA22005C0 |  | SW-05 ; 1st Fix, Inst of Water supply pipe (ceiling) (Public Area) | 54d | 2011-10-01 | 2011-12-07 | S05PA22019C0 SS+10d, S05PA23001C0 |  |  |  |  | 110.85d | 9.75d | PLUMBING [1688.4 h]; Cost |  |  | S05PA22005C0 | SW | C | 05 | PA | ME | 220 | 05 | BILL 9 | B09 | S2 | 1F | R00 | ACF04 | 220 |  | 1S | MEP | M1F |  |  |  |  |  |  |  |  | 20 |  |  |  |  |
| S05PA23017C0 |  | SW-05 ; 1st Fix, Inst of CHW pipe (Public Area) | 54d | 2011-10-01 | 2011-12-07 | S05PA21111C0 SS+14d, S05PA23001C0 |  |  |  |  | 91.86d | 0d | MECHANICAL [1687.2 h]; Cost |  |  | S05PA23017C0 | SW | C | 05 | PA | ME | 230 | 17 | BILL 9 | B09 | S2 | 1F | R00 | ACF04 | 230 |  | 1S | MEP | M1F |  |  |  |  |  |  |  |  | 30 |  |  |  |  |
| S05PA23023C0 |  | SW-05 ; 1st Fix, Inst of Main Ducting (Public Area) | 60d | 2011-10-12 | 2011-12-26 | S05PA23001C0, S05PA23017C0 SS+10d |  |  |  |  | 117.86d | 0d | MECHANICAL [6650.4 h]; Cost |  |  | S05PA23023C0 | SW | C | 05 | PA | ME | 230 | 23 | BILL 9 | B09 | S2 | 1F | R00 | ACF04 | 230 |  | 1S | MEP | M1F |  |  |  |  |  |  |  |  | 30 |  |  |  |  |
| S05PA22011C0 |  | SW-05 ; 2nd Fix, Drainage/Water pipe (wall) (Public Area) | 42d | 2011-10-18 | 2011-12-12 | S05PA09201C0, SAFWA00107M0 |  |  |  |  | 101.1d | 0d | PLUMBING [310.8 h]; Cost |  |  | S05PA22011C0 | SW | C | 05 | PA | ME | 220 | 11 | BILL 9 | B09 | S2 | 2F | R00 | ACF07 | 220 |  | 2n | MEP |  |  |  |  |  |  |  |  |  |  |  |  |  |  |
| S05PA26009C0 |  | SW-05 ; 2nd Fix, Inst of Wall conduites (Public Area) | 42d | 2011-10-18 | 2011-12-12 | S05PA09201C0, SAFWA00107M0 |  |  |  |  | 101.1d | 0d | ELECTRICAL [447.6 h]; Cost |  |  | S05PA26009C0 | SW | C | 05 | PA | ME | 260 | 09 | BILL 9 | B09 | S2 | 2F | R00 | ACF07 | 260 |  | 2n | MEP |  |  |  |  |  |  |  |  |  |  |  |  |  |  |
| S05PA08103C0 |  | SW-05 ; Door Frames (Public Area) | 18d | 2011-11-01 | 2011-11-24 | S05PA09201C0, SAFWA00107M0, GNHE08101C0 FS+69d |  |  |  |  | 35.5d | 0d | ASSORTED DOORS [99 h]; Cost |  |  | S05PA08103C0 | SW | C | 05 | PA | DO | 081 | 03 | BILL 9 | B09 | S2 | DF | R00 | ACF06 | 081 |  |  |  |  |  |  |  |  | 316 | 947 |  |  |  |  |  | 08 |  |
| S05PA27001C0 |  | SW-05 ; 1st Fix, Wiring/ Cabling work (Public Area) | 48d | 2011-11-23 | 2012-01-22 | S05PA26001C0, S05PA26013C0, S05PA27010C0 |  |  |  |  | 144.66d | 52.8d | ELECTRICAL [241.2 h]; Cost |  |  | S05PA27001C0 | SW | C | 05 | PA | ME | 270 | 01 | BILL 9 | B09 | S2 | 1F | R00 | ACF04 | 270 |  | 1S | MEP | M1F |  |  |  |  |  |  |  |  |  |  |  |  |  |
| S05PA23009C0 |  | SW-05 ; 2nd Fix, Inst of VAV'S CHW connection (Public Area) | 42d | 2011-12-08 | 2012-01-26 | S05PA23017C0 |  |  |  |  | 91.86d | 0d | MECHANICAL [1018.8 h]; Cost |  |  | S05PA23009C0 | SW | C | 05 | PA | ME | 230 | 09 | BILL 9 | B09 | S2 | 2F | R00 | ACF07 | 230 |  | 2n | MEP |  |  |  |  |  |  |  |  |  |  |  |  |  |  |
| S05PA01005C0 |  | SW-05 ; 2nd, Wall Inspection by Consultant (Public Area) | 6d | 2011-12-12 | 2011-12-19 | S05PA22011C0, S05PA26009C0 |  |  |  |  | 101.1d | 0d | Labor General [0.6 h]; Cost |  |  | S05PA01005C0 | SW | C | 05 | PA | ME | 010 | 05 | BILL 9 | B09 | S2 | WI | R00 | ACF07 | 010 |  | 2n | MEP |  |  |  |  |  |  |  |  |  |  |  |  |  |  |
| S05PA09205C0 |  | SW-05 ; Partitions Closing (Public Area) | 36.21d | 2011-12-19 | 2012-01-31 | S05PA01005C0, S05PA09203C0, S05PA22005C0, S05PA22019C0, SAFOA09212C1 FF, S05PA08103C0 FF |  |  |  |  | 101.1d | 0d | PARTITIONS [171 m]; PARTITIONS [2351 h]; Cost |  |  | S05PA09205C0 | SW | C | 05 | PA | PT | 092 | 05 | BILL 9 | B09 | S2 | FF | R00 | ACF06 | 092 |  |  | GP | P2F |  |  |  |  | 315 | 946 |  |  |  |  |  |  |  |
| S05PA23008C0 |  | SW-05 ; 1st Fix, Inst of VCD's/FD's (Public Area) | 48d | 2011-12-27 | 2012-02-22 | S05PA23023C0 |  |  |  |  | 117.86d | 26d | MECHANICAL [1111.2 h]; Cost |  |  | S05PA23008C0 | SW | C | 05 | PA | ME | 230 | 08 | BILL 9 | B09 | S2 | 1F | R00 | ACF04 | 230 |  | 1S | MEP | M1F |  |  |  |  |  |  |  |  |  |  |  |  |  |
| S05PA23015C0 |  | SW-05 ; 2nd Fix, Insulation of CHW pipe & Duct (Public Area) | 48d | 2012-01-28 | 2012-03-24 | S05PA23009C0, S05PA23017C0, S05PA23023C0 |  |  |  |  | 91.86d | 0d | MECHANICAL [3716.4 h]; Cost |  |  | S05PA23015C0 | SW | C | 05 | PA | ME | 230 | 15 | BILL 9 | B09 | S2 | 2F | R00 | ACF07 | 230 |  | 2n | MEP |  |  |  |  |  |  |  |  |  |  |  |  |  |  |
| S05PA09901C0 |  | SW-05 ; Wall Prime & 1st coat (Public Area) | 30d | 2012-01-31 | 2012-03-07 | S05PA09205C0 |  |  |  |  | 105.9d | 0d | WALL PAINT [729 h]; WALL PAINT [909 m2]; Cost |  |  | S05PA09901C0 | SW | C | 05 | PA | PA | 099 | 01 | BILL 9 | B09 | S2 | 01 | R00 | ACF06 | 099 |  |  |  |  |  |  |  |  | 328 | 956 |  |  |  |  |  |  |  |
| S05PA26005C0 |  | SW-05 ; 2nd Fix, Wiring for Power/Lighting/Emergency (Public Area) | 42d | 2012-01-31 | 2012-03-21 | S05PA09205C0 |  |  |  |  | 155.1d | 0d | ELECTRICAL [241.2 h]; Cost |  |  | S05PA26005C0 | SW | C | 05 | PA | ME | 260 | 05 | BILL 9 | B09 | S2 | 2F | R00 | ACF07 | 260 |  | 2n | MEP |  |  |  |  |  |  |  |  |  |  |  |  |  |  |
| S05PA26007C0 |  | SW-05 ; 2nd Fix, Cable Pulling (Public Area) | 42d | 2012-01-31 | 2012-03-21 | S05PA09201C0 SS+6d, SAFWA00107M0, S05PA09205C0 |  |  |  |  | 197.1d | 105.24d | ELECTRICAL [1532.4 h]; Cost |  |  | S05PA26007C0 | SW | C | 05 | PA | ME | 260 | 07 | BILL 9 | B09 | S2 | 2F | R00 | ACF07 | 260 |  | 2n | MEP |  |  |  |  |  |  |  |  |  |  |  |  |  |  |
| S05PA26011C0 |  | SW-05 ; 2nd Fix, Inst of Equipment (DB) (Public Area) | 48d | 2012-01-31 | 2012-03-28 | S05PA09205C0 |  |  |  |  | 149.1d | 57.24d | ELECTRICAL [646.8 h]; Cost |  |  | S05PA26011C0 | SW | C | 05 | PA | ME | 260 | 11 | BILL 9 | B09 | S2 | 2F | R00 | ACF04 | 260 |  | 2n | MEP |  |  |  |  |  |  |  |  |  |  |  |  |  | E |
| S05PA26053C0 |  | SW-05 ; 2nd Fix, Wiring / Cabling (Public Area) | 42d | 2012-01-31 | 2012-03-21 | S05PA09203C0, S05PA09205C0 |  |  |  |  | 101.1d | 9.24d | ELECTRICAL [241.2 h]; Cost |  |  | S05PA26053C0 | SW | C | 05 | PA | ME | 260 | 53 | BILL 9 | B09 | S2 | 2F | R00 | ACF07 | 260 |  | 2n | MEP |  |  |  |  |  | 389 | 977 |  |  |  |  |  |  |  |
| S05PA05501C0 |  | SW-05 ; Handrails & balustrade (Public Area) | 36d | 2012-03-07 | 2012-04-18 | S05PA09901C0 |  |  |  |  | 227.04d | 135.18d | SECONDARY STEEL [670 h]; Cost |  |  | S05PA05501C0 | SW | C | 05 | PA | SW | 055 | 01 | BILL 9 | B09 | S2 | 01 | R00 | ACF03 | a |  |  |  |  |  |  |  |  |  |  |  |  |  |  |  |  |  |
| S05PA26015C0 |  | SW-05 ; Final Fix, Termination & Gladding of Cables (Public Area) | 36d | 2012-03-21 | 2012-05-02 | S05PA26005C0 |  |  |  |  | 155.1d | 51.24d | ELECTRICAL [85.2 h]; Cost |  |  | S05PA26015C0 | SW | C | 05 | PA | ME | 260 | 15 | BILL 9 | B09 | S2 | FF | R00 | ACF07 | 260 |  | FF | MEP |  |  |  |  |  |  |  |  |  |  |  |  |  |  |
| S05PA09601C0 |  | SW-05 ; Flooring (Rubber & etc) (Public Area) | 42d | 2012-04-02 | 2012-05-21 | OGNMU00055S0, S05PA09901C0, S05PA09501C0 |  |  |  |  | 161.55d | 0d | RUBBER FLOOR [96 h]; RUBBER FLOOR [228 m2]; Cost |  |  | S05PA09601C0 | SW | C | 05 | PA | FF | 096 | 01 | BILL 9 | B09 | S2 | 03 | R00 | ACF06 | RF |  |  |  |  |  |  |  |  | 326 | 955 |  |  |  |  |  |  |  |
| S05PA09905C0 |  | SW-05 ; Ceiling Prime & 1st coat (Public Area) | 30d | 2012-04-02 | 2012-05-07 | S05PA09501C0 |  |  |  |  | 181.8d | 0d | CEILING PAINT [135 h]; CEILING PAINT [167 m2]; Cost |  |  | S05PA09905C0 | SW | C | 05 | PA | PA | 099 | 05 | BILL 9 | B09 | S2 | 01 | R00 | ACF06 | 099 |  |  |  |  |  |  |  |  | 330 | 958 |  |  |  |  |  |  |  |
| S05PA21115C0 |  | SW-05 ; 2nd Fix, Inst of Sprinkler droppers (Public Area) | 42d | 2012-04-02 | 2012-05-21 | S05PA09501C0 |  |  |  |  | 103.86d | 0d | MECHANICAL [1309.2 h]; Cost |  |  | S05PA21115C0 | SW | C | 05 | PA | ME | 211 | 15 | BILL 9 | B09 | S2 | 2F | R00 | ACF07 | 211 |  | 2n | MEP |  |  |  |  |  |  |  |  |  |  |  |  |  |  |
| S05PA23021C0 |  | SW-05 ; 2nd Fix, Inst of Flexible Duct & Plenum boxes (Public Area) | 42d | 2012-04-02 | 2012-05-21 | S05PA09205C0, S05PA09501C0 |  |  |  |  | 103.86d | 0d | MECHANICAL [166.8 h]; Cost |  |  | S05PA23021C0 | SW | C | 05 | PA | ME | 230 | 21 | BILL 9 | B09 | S2 | 2F | R00 | ACF07 | 230 |  | 2n | MEP |  |  |  |  |  |  |  |  |  |  |  |  |  |  |
| S05PA26017C0 |  | SW-05 ; Final Fix, Inst of Ceiling rose (Public Area) | 36d | 2012-04-02 | 2012-05-14 | S05PA09501C0 |  |  |  |  | 103.86d | 0d | ELECTRICAL [36 h]; Cost |  |  | S05PA26017C0 | SW | C | 05 | PA | ME | 260 | 17 | BILL 9 | B09 | S2 | FF | R00 | ACF07 | 260 |  | FF | MEP |  |  |  |  |  |  |  |  |  |  |  |  |  |  |
| S05PA27002C0 |  | SW-05 ; 2nd Fix, Wiring Droppers (Public Area) | 42d | 2012-04-02 | 2012-05-21 | S05PA09501C0 |  |  |  |  | 103.86d | 0d | ELECTRICAL [241.2 h]; Cost |  |  | S05PA27002C0 | SW | C | 05 | PA | ME | 270 | 02 | BILL 9 | B09 | S2 | 2F | R00 | ACF07 | 270 |  | 2n | MEP |  |  |  |  |  |  |  |  |  |  |  |  |  |  |
| S05PA27020C0 |  | SW-05 ; 2nd Fix, Inst of ELV Equipment (Panels) (Public Area) | 54d | 2012-04-02 | 2012-06-04 | S05PA09205C0, S05PA09501C0 |  |  |  |  | 91.86d | 0d | ELECTRICAL [1868.4 h]; Cost |  |  | S05PA27020C0 | SW | C | 05 | PA | ME | 270 | 20 | BILL 9 | B09 | S2 | 2F | R00 | ACF04 | 270 |  | 2n | MEP |  |  |  |  |  |  |  |  |  |  |  |  |  | E |
| S05PA09903C0 |  | SW-05 ; Wall Final Paint (Public Area) | 30d | 2012-05-07 | 2012-06-11 | S05PA09901C0, S05PA09905C0 |  |  |  |  | 181.8d | 66d | WALL PAINT [393 h]; WALL PAINT [489 m2]; Cost |  |  | S05PA09903C0 | SW | C | 05 | PA | PA | 099 | 03 | BILL 9 | B09 | S2 | 02 | R00 | ACF06 | 099 |  |  |  |  |  |  |  |  | 329 | 957 |  |  |  |  |  |  |  |
| S05PA26003C0 |  | SW-05 ; Final Fix, Inst of Light fittings (Public Area) | 42d | 2012-05-14 | 2012-07-03 | S05PA09501C0, S05PA26017C0 |  |  |  |  | 103.86d | 0d | ELECTRICAL [4813.2 h]; Cost |  |  | S05PA26003C0 | SW | C | 05 | PA | ME | 260 | 03 | BILL 9 | B09 | S2 | FF | R00 | ACF07 | 260 |  | FF | MEP |  |  |  |  |  |  |  |  |  |  |  |  |  |  |
| S05PA08107C0 |  | SW-05 ; Doors (Public Area) | 19d | 2012-05-21 | 2012-06-12 | S05PA08103C0, S05PA09901C0, S05PA09601C0 |  |  |  |  | 161.55d | 0d | ASSORTED DOORS [240 h]; ASSORTED DOORS [24 no]; Cost |  |  | S05PA08107C0 | SW | C | 05 | PA | DO | 081 | 07 | BILL 9 | B09 | S2 | DR | R00 | ACF06 | 081 |  |  |  |  |  |  |  |  | 317 | 948 |  |  |  |  |  | 08 |  |
| S05PA21113C0 |  | SW-05 ; Final Fix, Inst of Sprinklers head/ Extinguisher (Public Area) | 36d | 2012-05-21 | 2012-07-03 | S05PA09501C0, S05PA21115C0 |  |  |  |  | 103.86d | 0d | MECHANICAL [237.6 h]; Cost |  |  | S05PA21113C0 | SW | C | 05 | PA | ME | 211 | 13 | BILL 9 | B09 | S2 | FF | R00 | ACF07 | 211 |  | FF | MEP |  |  |  |  |  |  |  |  |  |  |  |  |  |  |
| S05PA23019C0 |  | SW-05 ; Final Fix, Inst of Grilles & Diffusers (Public Area) | 36d | 2012-05-21 | 2012-07-03 | S05PA09501C0, S05PA23021C0 |  |  |  |  | 103.86d | 0d | MECHANICAL [835.2 h]; Cost |  |  | S05PA23019C0 | SW | C | 05 | PA | ME | 230 | 19 | BILL 9 | B09 | S2 | FF | R00 | ACF07 | 230 |  | FF | MEP |  |  |  |  |  |  |  |  |  |  |  |  |  |  |
| S05PA27030C0 |  | SW-05 ; Final Fix, Inst of ELV devise (Detector/Speaker) (Public Area) | 36d | 2012-05-21 | 2012-07-03 | S05PA09501C0, S05PA27002C0 |  |  |  |  | 103.86d | 0d | ELECTRICAL [1348.8 h]; Cost |  |  | S05PA27030C0 | SW | C | 05 | PA | ME | 270 | 30 | BILL 9 | B09 | S2 | FF | R00 | ACF07 | 270 |  | FF | MEP |  |  |  |  |  |  |  |  |  |  |  |  |  |  |
| S05PA09701C0 |  | SW-05 ; Wall finishes (ST, WD, WC) (Public Area) | 42d | 2012-06-04 | 2012-07-24 | OGNMU00051S0, OGNMU00051S0 FF, S05PA26011C0, S05PA27020C0, SVT3414211C0, SVT4114211C0, SVT4314211C0, TVT3114211C0, TVT3214255C0, TVT3314245C0 |  |  |  |  | 91.86d | 0d | ASSORTED WALL FINISH [2491 h]; ASSORTED WALL FINISH [2864 m2]; Cost |  |  | S05PA09701C0 | SW | C | 05 | PA | WF | 097 | 01 | BILL 9 | B09 | S2 | 01 | R00 | ACF06 | 097 |  |  |  |  |  |  |  |  | 105 | 1002 |  |  |  |  |  |  |  |
| S05PA08301C0 |  | SW-05 ; Overhead coiling doors (Public Area) | 0d | 2012-06-12 | 2012-06-12 | CP3M108105C0, S05PA08107C0 |  |  |  |  | 161.55d | 0d | Cost |  |  | CP3ME08301C0 | SW | C | 05 | PA | DO | 083 | 01 | BILL 9 | B09 | S2 | 05 | R00 | ACF06 | 083 |  |  |  |  |  |  |  |  |  |  |  |  |  |  |  |  |  |
| S05PA08709C0 |  | SW-05 ; Ironmongery (Public Area) | 19.25d | 2012-06-12 | 2012-07-05 | S05PA08107C0, S05PA08301C0 |  |  |  |  | 161.55d | 69.69d | IRONMONGERY [380 h]; IRONMONGERY [38 no]; Cost |  |  | S05PA08709C0 | SW | C | 05 | PA | DO | 087 | 09 | BILL 9 | B09 | S2 | IM | R00 | ACF06 | 087 |  |  |  |  |  |  |  |  | 322 | 951 |  |  |  |  |  | 08 |  |
| S05PA01006C0 |  | SW-05 ; 2nd, Ceiling Inspection by Consultants (Public Area) | 6d | 2012-07-03 | 2012-07-10 | S05PA21115C0, S05PA23009C0, S05PA23015C0, S05PA27002C0, S05PA09501C0, S05PA21113C0, S05PA23019C0, S05PA26003C0, S05PA26017C0, S05PA27030C0, S05PA26015C0 |  |  |  |  | 103.86d | 12d | Labor General [0.6 h]; Cost |  |  | S05PA01006C0 | SW | C | 05 | PA | ME | 010 | 06 | BILL 9 | B09 | S2 | CI | R00 | ACF07 | 010 |  | 2n | MEP |  |  |  |  |  |  |  |  |  |  |  |  |  |  |
| S05PA11001C0 |  | SW-05 ; Wall Protection (WP, CG, WG, FCG) (Public Area) | 24d | 2012-07-24 | 2012-08-23 | S05PA09701C0, S05PA09903C0 SS |  |  |  |  | 121.8d | 29.94d | Labor General [2 h]; Cost |  |  | S05PA11001C0 | SW | C | 05 | PA | WF | 110 | 01 | BILL 9 | B09 | S2 | 03 | R00 | ACF08 | b |  |  |  |  |  |  |  |  | 326 | 1001 |  |  |  |  |  |  |  |
| S05PA11009C0 |  | SW-05 ; Signage (Public Area) | 15d | 2012-07-24 | 2012-08-11 | OGNMU00071S0, S05PA09701C0 |  |  |  |  | 130.8d | 38.94d | SIGNAGES [146 h]; SIGNAGES [146.11 no]; Cost |  |  | S05PA11009C0 | SW | C | 05 | PA | SA | 110 | 09 | BILL 9 | B09 | S2 | 09 | R00 | ACF08 | c |  |  |  |  |  |  |  |  | 322 | 951 |  |  |  |  |  | 08 |  |
| S05PA09907C0 |  | SW-05 ; Ceiling Final paint (Public Area) | 18d | 2012-08-23 | 2012-09-13 | S05PA09601C0, S05PA09905C0, S05PA09503C0 |  |  |  |  | 103.86d | 12d | CEILING PAINT [73 h]; CEILING PAINT [90 m2]; Cost |  |  | S05PA09907C0 | SW | C | 05 | PA | PA | 099 | 07 | BILL 9 | B09 | S2 | 02 | R00 | ACF06 | 099 |  |  |  |  |  |  |  |  | 331 | 959 |  |  |  |  |  |  |  |
| S05PA26019C0 |  | SW-05 ; Final Fix, Inst of Switch/Sockets (Public Area) | 18d | 2012-08-23 | 2012-09-13 | S05PA09901C0, S05PA09503C0 |  |  |  |  | 91.86d | 0d | ELECTRICAL [256.8 h]; Cost |  |  | S05PA26019C0 | SW | C | 05 | PA | ME | 260 | 19 | BILL 9 | B09 | S2 | FF | R00 | ACF07 | 260 |  | FF | MEP |  |  |  |  |  |  |  |  |  |  |  |  |  |  |

| ID | WBS | Activity | Duration | Start | Finish | Predecessors | Total float | Free float | Resources | change id | CCAD BUILDING(SET) | CCAD PHASE(SET) | CCAD FLOOR(SET) | CCAD ZONE(SET) | CCAD WORK(SET) | CCAD SECTION(SET) | CCAD SERIAL No.(SET) | CCAD CBS(SET) | CCAD BILL(SET) | CCAD HANDOVER(SET) | CCAD TAG(SET) | CCAD REV(SET) | CCADACF (SET) | CCAD SSCF | Change Order # | NEW ACTIVITY ID | CCAD CSA | Act Selector % | CCAD DIVISION(SET) | CCAD SUB ZONE MEP(SET) | U% | CCAD MEQ | IDDD |
| --- | --- | --- | --- | --- | --- | --- | --- | --- | --- | --- | --- | --- | --- | --- | --- | --- | --- | --- | --- | --- | --- | --- | --- | --- | --- | --- | --- | --- | --- | --- | --- | --- | --- |
|  | 10 | **Precommissioning Tesing & snagging (Public Area)** |  | 2012-09-13 | 2012-10-30 |  |  |  |  |  |  |  |  |  |  |  |  |  |  |  |  |  |  |  |  |  |  |  |  |  |  |  |  |
| S05TS01813C0 |  | SW-05 ; MEP de-snag, FIREM sign-off | 12d | 2012-09-13 | 2012-09-27 | S05PA26015C0, S05PA21113C0, S05PA23019C0, S05PA26017C0, S05PA26003C0, S05PA27030C0, S05PA26019C0 | 91.86d | 0d | TESTING & COMMISSIONING [510 h]; Cost | S05TS01801C0 | SW | C | 05 | TS | SC | 018 | 01 | BILL 9 | B09 | S2 | 01 | R00 | ACF07 | 018 |  |  |  |  |  |  |  |  |  |
| S05TS01806C0 |  | SW-05 ; Touch-up & Clean / JV inspection /CIR /De-snag | 18d | 2012-09-27 | 2012-10-18 | S05PA08301C0, S05PA08709C0, S05PA09601C0, S05PA09701C0, S05PA09903C0, S05PA09907C0, S05PA11001C0, S05PA11009C0, S05TS01813C0, S05PA05501C0, S05PA09503C0 | 91.86d | 1.81d | TESTING & COMMISSIONING [128 h]; Cost | S05TS01802C0 | SW | C | 05 | TS | SC | 018 | 02 | BILL 9 | B09 | S2 | 02 | R00 | ACF07 | 018 |  |  |  |  |  |  |  |  |  |
| S05TS01809C0 |  | SW-05 ; Consultant's final de-snag inspection | 7d | 2012-10-20 | 2012-10-30 | S05TS01806C0, S05TS01808C0 | 90.05d | 74.05d | Labor General [1 h]; Cost | S05TS01803C0 | SW | C | 05 | TS | SC | 018 | 03 | BILL 9 | B09 | S2 | 03 | R00 | ACF07 | 018 |  |  |  |  |  |  |  |  |  |
|  | 05 | **TR Room** |  | 2011-10-01 | 2012-09-11 |  |  |  |  |  |  |  |  |  |  |  |  |  |  |  |  |  |  |  |  |  |  |  |  |  |  |  |  |
| S05TR09201C0 |  | SW-05 ; Metal Studs (TR RM) | 30d | 2011-10-01 | 2011-11-03 | S05PA09201C0 SS | 20.62d | 0d | PARTITIONS [115 h]; PARTITIONS - Metal Studs [37 m]; Cost | S05TR09201C0 | SW | C | 05 | TR | PT | 092 | 01 | BILL 9 | B09 | S2 | 1F | R00 | ACF06 | 092 | 313 | 885 | GP | PMS |  |  |  |  |  |
| S05TR08101C0 |  | SW-05 ; Door Frames (TR RM) | 18d | 2011-11-05 | 2011-11-29 | S05TR09201C0, GNHE08101C0 FS+69d | 74.62d | 54d | ASSORTED DOORS [4 h]; Cost | S05TR08101C0 | SW | C | 05 | TR | DO | 081 | 01 | BILL 9 | B09 | S2 | DF | R00 | ACF06 | 081 | 316 | 20001090 |  |  | 08 |  |  |  |  |
| S05TR26026C0 |  | SW-05 ; 2nd Fix, Conduit (TR RM) | 30d | 2011-11-05 | 2011-12-14 | S05TR09201C0 | 20.62d | 0d | ELECTRICAL [447.6 h]; Cost | S05TR26026C0 | SW | C | 05 | TR | ME | 260 | 26 | BILL 9 | B09 | S2 | 2F | R00 | ACF07 | 260 |  |  | MEP |  |  | 2n |  |  |  |
| S05TR09203C0 |  | SW-05 ; Partitions 1st face (TR RM) | 30d | 2011-11-22 | 2011-12-28 | S05TR09201C0 FS+12d | 20.62d | 0d | PARTITIONS [37 m]; PARTITIONS [81 h]; Cost | S05TR09203C0 | SW | C | 05 | TR | PT | 092 | 03 | BILL 9 | B09 | S2 | 2F | R00 | ACF06 | 092 | 314 | 886 | GP | P1F |  |  |  |  |  |
| S05TR01005C0 |  | SW-05 ; 2nd, Wall Inspection by Consultant (TR RM) | 12d | 2011-12-15 | 2011-12-28 | S05TR26026C0 | 20.62d | 0d | Labor General [0.6 h]; Cost | S05TR01005C0 | SW | C | 05 | TR | ME | 010 | 05 | BILL 9 | B09 | S2 | WI | R00 | ACF07 | 010 |  |  | MEP |  |  | 2n |  |  |  |
| S05TR09205C0 |  | SW-05 ; Partitions Closing (TR RM) | 30d | 2011-12-29 | 2012-02-02 | S05TR01005C0, S05TR09201C0, S05TR09203C0, SAFOA09212C1 FF, S05TR08101C0 FF | 20.62d | 0d | PARTITIONS [37 m]; PARTITIONS [109 h]; Cost | S05TR09205C0 | SW | C | 05 | TR | PT | 092 | 05 | BILL 9 | B09 | S2 | FF | R00 | ACF06 | 092 | 315 | 887 | GP | P2F |  |  |  |  |  |
| S05TR09901C0 |  | SW-05 ; Wall Prime & 1st coat (TR RM) | 18d | 2012-02-05 | 2012-02-25 | S05TR09205C0 | 20.62d | 0d | WALL PAINT [33 h]; WALL PAINT [40 m2]; Cost | S05TR09901C0 | SW | C | 05 | TR | PA | 099 | 01 | BILL 9 | B09 | S2 | 01 | R00 | ACF06 | 099 | 360 | 20001110 |  |  |  |  |  |  |  |
| S05TR23009C0 |  | SW-05 ; 2nd Fix, Inst of VAV'S CHW connection (TR RM) | 30d | 2012-02-05 | 2012-03-10 | S05TR09205C0 | 44.62d | 0d | MECHANICAL [1018.8 h]; Cost | S05TR23009C0 | SW | C | 05 | TR | ME | 230 | 09 | BILL 9 | B09 | S2 | 2F | R00 | ACF07 | 230 |  |  | MEP |  |  | 2n | 0 |  |  |
| S05TR23011C0 |  | SW-05 ; 2nd Fix, Inst of VCD's/FD's (TR RM) | 30d | 2012-02-05 | 2012-03-10 | S05TR09205C0 | 44.62d | 0d | MECHANICAL [1111.2 h]; Cost | S05TR23011C0 | SW | C | 05 | TR | ME | 230 | 11 | BILL 9 | B09 | S2 | 2F | R00 | ACF07 | 230 |  |  | MEP |  |  | 2n |  |  |  |
| S05TR26007C0 |  | SW-05 ; 2nd Fix, Cable Pulling (TR RM) | 30d | 2012-02-05 | 2012-03-10 | S05TR09203C0, S05TR09205C0 | 80.62d | 60d | ELECTRICAL [1532.4 h]; Cost | S05TR26007C0 | SW | C | 05 | TR | ME | 260 | 07 | BILL 9 | B09 | S2 | 2F | R00 | ACF07 | 260 |  |  | MEP |  |  | 2n |  |  |  |
| S05TR26009C0 |  | SW-05 ; 2nd Fix, Inst of Equipment (DB, TR, SG,BUS) (TR RM) | 54d | 2012-02-05 | 2012-04-07 | S05TR09205C0 | 26.62d | 0d | ELECTRICAL [3362.4 h]; Cost | S05TR26009C0 | SW | C | 05 | TR | ME | 260 | 09 | BILL 9 | B09 | S2 | 2F | R00 | ACF04 | 260 |  |  | MEP |  |  | 2n |  | E |  |
| S05TR26027C0 |  | SW-05 ; 2nd Fix, Wiring / Cabling (TR RM) | 30d | 2012-02-05 | 2012-03-10 | S05TR09203C0, S05TR09205C0 | 92.5d | 71.88d | ELECTRICAL [241.2 h]; Cost | S05TR26027C0 | SW | C | 05 | TR | ME | 260 | 27 | BILL 9 | B09 | S2 | 2F | R00 | ACF07 | 260 | 417 | 1318 | MEP |  |  | 2n |  |  |  |
| S05TR08105C0 |  | SW-05 ; Doors (TR RM) | 17.88d | 2012-02-26 | 2012-03-17 | S05TR08101C0, S05TR09901C0 | 122.5d | 0d | ASSORTED DOORS [10 h]; ASSORTED DOORS [1 no]; Cost | S05TR08105C0 | SW | C | 05 | TR | DO | 081 | 05 | BILL 9 | B09 | S2 | DR | R00 | ACF06 | 081 | 317 | 1325 |  |  | 08 |  |  |  |  |
| S05TR09501C0 |  | SW-05 ; Ceiling Grid and Service Tile (TR RM) | 36d | 2012-02-26 | 2012-04-07 | S05TR09205C0 SS+15d, S05TR09901C0 | 20.62d | 0d | CEILING GRID FOR GYPSUM [102.27 h]; CEILING GRID FOR GYPSUM [8.79 m2]; Cost | S05TR09501C0 | SW | C | 05 | TR | CE | 095 | 01 | BILL 9 | B09 | S2 | 01 | R00 | ACF06 | 095 | 336 | 1327 |  |  |  |  |  |  | 1 |
| S05TR09903C0 |  | SW-05 ; Wall - Final Paint (TR RM) | 11.88d | 2012-02-26 | 2012-03-10 | S05TR09901C0 | 140.38d | 119.75d | WALL PAINT [18 h]; WALL PAINT [21 m2]; Cost | S05TR09903C0 | SW | C | 05 | TR | PA | 099 | 03 | BILL 9 | B09 | S2 | 02 | R00 | ACF06 | 099 | 361 | 1312 |  |  |  |  |  |  |  |
| S05TR23013C0 |  | SW-05 ; 2nd Fix, Insulation of CHW pipe & Duct (TR RM) | 36d | 2012-03-11 | 2012-04-21 | S05TR23009C0, S05TR23011C0 | 44.62d | 24d | MECHANICAL [3716.4 h]; Cost | S05TR23013C0 | SW | C | 05 | TR | ME | 230 | 13 | BILL 9 | B09 | S2 | 2F | R00 | ACF07 | 230 |  |  | MEP |  |  | 2n |  |  |  |
| S05TR08709C0 |  | SW-05 ; Ironmongery (TR RM) | 11.88d | 2012-03-17 | 2012-03-31 | S05TR08105C0 | 122.5d | 101.88d | IRONMONGERY [20 h]; IRONMONGERY [2 no]; Cost | S05TR08709C0 | SW | C | 05 | TR | DO | 087 | 09 | BILL 9 | B09 | S2 | IM | R00 | ACF06 | 087 | 322 | 20001100 |  |  | 08 |  |  |  |  |
| S05TR09601C0 |  | SW-05 ; Floor Finishes (TR RM) | 12d | 2012-04-08 | 2012-04-21 | S05TR09205C0, S05TR09501C0 | 26.5d | 0d | ASSORTED FLOOR FINISH [640 h]; ASSORTED FLOOR FINISH [353 m2]; Cost | S05TR09601C0 | SW | C | 05 | TR | FF | 096 | 01 | BILL 9 | B09 | S2 | 01 | R00 | ACF06 | FF | 359 | 20001120 |  |  |  |  |  |  |  |
| S05TR09905C0 |  | SW-05 ; Ceiling Prime & 1st coat (TR RM) | 17.88d | 2012-04-08 | 2012-04-28 | S05TR09501C0 | 86.5d | 47.88d | CEILING PAINT [7 h]; CEILING PAINT [7 m2]; Cost | S05TR09905C0 | SW | C | 05 | TR | PA | 099 | 05 | BILL 9 | B09 | S2 | 01 | R00 | ACF06 | 099 | 362 | 1313 |  |  |  |  |  |  |  |
| S05TR23003C0 |  | SW-05 ; Final Fix, Inst of Grilles & Diffusers (TR RM) | 30d | 2012-04-08 | 2012-05-12 | S05TR09501C0 | 26.62d | 6d | MECHANICAL [835.2 h]; Cost | S05TR23003C0 | SW | C | 05 | TR | ME | 230 | 03 | BILL 9 | B09 | S2 | FF | R00 | ACF07 | 230 |  |  | MEP |  |  | FF |  |  |  |
| S05TR23023C0 |  | SW-05 ; 2nd Fix, Flexible ducts (TR RM) | 30d | 2012-04-08 | 2012-05-12 | S05TR09205C0, S05TR09501C0 | 38.5d | 17.88d | MECHANICAL [166.8 h]; Cost | S05TR23023C0 | SW | C | 05 | TR | ME | 230 | 23 | BILL 9 | B09 | S2 | 2F | R00 | ACF07 | 230 | 412 | 20001140 | MEP |  |  | 2n |  |  |  |
| S05TR23074C0 |  | SW-05 ; Final Fix, Grilles, panels & diffusers (TR RM) | 30d | 2012-04-08 | 2012-05-12 | S05TR09501C0 | 26.62d | 6d | MECHANICAL [835.2 h]; Cost | S05TR23074C0 | SW | C | 05 | TR | ME | 230 | 74 | BILL 9 | B09 | S2 | FF | R00 | ACF07 | 230 | 419 | 20001160 | MEP |  |  | FF |  |  |  |
| S05TR26005C0 |  | SW-05 ; 2nd Fix, Wiring for Power/Lighting/Emergency (TR RM) | 30d | 2012-04-08 | 2012-05-12 | S05TR26026C0, S05TR09501C0 | 38.5d | 17.88d | ELECTRICAL [241.2 h]; Cost | S05TR26005C0 | SW | C | 05 | TR | ME | 260 | 05 | BILL 9 | B09 | S2 | 2F | R00 | ACF07 | 260 |  |  | MEP |  |  | 2n |  |  |  |
| S05TR26013C0 |  | SW-05 ; Final Fix, Termination & Gladding of Cables (TR RM) | 30d | 2012-04-08 | 2012-05-12 | S05TR26009C0 | 26.62d | 6d | ELECTRICAL [85.2 h]; Cost | S05TR26013C0 | SW | C | 05 | TR | ME | 260 | 13 | BILL 9 | B09 | S2 | FF | R00 | ACF07 | 260 |  |  | MEP |  |  | FF |  |  |  |
| S05TR26015C0 |  | SW-05 ; Final Fix, Inst of Ceiling rose (TR RM) | 30d | 2012-04-08 | 2012-05-12 | S05TR09501C0 | 26.62d | 6d | ELECTRICAL [36 h]; Cost | S05TR26015C0 | SW | C | 05 | TR | ME | 260 | 15 | BILL 9 | B09 | S2 | FF | R00 | ACF07 | 260 |  |  | MEP |  |  | FF |  |  |  |
| S05TR26019C0 |  | SW-05 ; Final Fix, Inst of Light fittings (TR RM) | 36d | 2012-04-08 | 2012-05-19 | S05TR09501C0 | 20.62d | 0d | ELECTRICAL [4813.2 h]; Cost | S05TR26019C0 | SW | C | 05 | TR | ME | 260 | 19 | BILL 9 | B09 | S2 | FF | R00 | ACF07 | 260 |  |  | MEP |  |  | FF |  |  |  |
| S05TR26076C0 |  | SW-05 ; Final Fix, Lighting fittings (TR RM) | 36d | 2012-04-08 | 2012-05-19 | S05TR09501C0 | 20.62d | 0d | ELECTRICAL [4813.2 h]; Cost | S05TR26076C0 | SW | C | 05 | TR | ME | 260 | 76 | BILL 9 | B09 | S2 | FF | R00 | ACF07 | 260 | 420 | 20001170 | MEP |  |  | FF |  |  |  |
| S05TR27002C0 |  | SW-05 ; 2nd Fix, Dressing of ELV panels (TR RM) | 30d | 2012-04-08 | 2012-05-12 | S05TR09205C0, S05TR27020C0 SS | 32.62d | 0d | ELECTRICAL [206.4 h]; Cost | S05TR27002C0 | SW | C | 05 | TR | ME | 270 | 02 | BILL 9 | B09 | S2 | 2F | R00 | ACF07 | 270 |  |  | MEP |  |  | 2n |  |  |  |
| S05TR27020C0 |  | SW-05 ; 2nd Fix, Inst of ELV Equipment (Panels) (TR RM) | 24d | 2012-04-08 | 2012-05-05 | S05TR09205C0, S05TR09501C0 | 32.62d | 0d | ELECTRICAL [1868.4 h]; Cost | S05TR27020C0 | SW | C | 05 | TR | ME | 270 | 20 | BILL 9 | B09 | S2 | 2F | R00 | ACF04 | 270 |  |  | MEP |  |  | 2n |  | E |  |
| S05TR27030C0 |  | SW-05 ; Final Fix, Inst of ELV devise (Detector/Speaker) (TR RM) | 18d | 2012-04-15 | 2012-05-05 | S05TR27002C0 SS+6d | 32.62d | 12d | ELECTRICAL [1348.8 h]; Cost | S05TR27030C0 | SW | C | 05 | TR | ME | 270 | 30 | BILL 9 | B09 | S2 | FF | R00 | ACF07 | 270 |  |  | MEP |  |  | FF |  |  |  |
| S05TR21115C0 |  | SW-05 ; 2nd Fix, Gaseous Fire Suppression (TR RM) | 30d | 2012-04-22 | 2012-05-26 | S05TR09601C0 | 26.5d | 5.88d | MECHANICAL [3496.8 h]; Cost | S05TR21115C0 | SW | C | 05 | TR | ME | 211 | 15 | BILL 9 | B09 | S2 | 2F | R00 | ACF07 | 211 | 411 | 20001130 | MEP |  |  | 2n |  |  |  |
| S05TR01006C0 |  | SW-05 ; 2nd, Ceiling Inspection by Consultants (TR RM) | 11.88d | 2012-05-20 | 2012-06-02 | S05TR23009C0, S05TR23011C0, S05TR23013C0, S05TR26007C0, S05TR09501C0, S05TR23003C0, S05TR23074C0, S05TR26015C0, S05TR26019C0, S05TR26076C0, S05TR27030C0, S05TR26013C0 | 20.62d | 0d | Labor General [0.6 h]; Cost | S05TR01006C0 | SW | C | 05 | TR | ME | 010 | 06 | BILL 9 | B09 | S2 | CI | R00 | ACF07 | 010 |  |  | MEP |  |  | 2n |  |  |  |
| S05TR09503C0 |  | SW-05 ; Ceiling closure (TR RM) | 17.88d | 2012-06-02 | 2012-06-24 | S05TR01006C0, S05TR21115C0, S05TR26005C0, S05TR26007C0, S05TR26026C0, S05TR26027C0, S05TR23023C0, S05TR27002C0 | 20.62d | 0d | ASSORTED CEILING FINISH [96.56 h]; CEILING GYPSUM [2.87 h]; ASSORTED CEILING FINISH [157 m2]; CEILING GYPSUM [9 m2]; Cost | S05TR09503C0 | SW | C | 05 | TR | CE | 095 | 03 | BILL 9 | B09 | S2 | 02 | R00 | ACF06 | 095 | 337 | 20001080 |  |  |  |  |  |  |  |
| S05TR09907C0 |  | SW-05 ; Ceiling - Final paint (TR RM) | 11.88d | 2012-06-24 | 2012-07-08 | S05TR09905C0, S05TR09503C0 | 38.62d | 18d | CEILING PAINT [4 h]; CEILING PAINT [4 m2]; Cost | S05TR09907C0 | SW | C | 05 | TR | PA | 099 | 07 | BILL 9 | B09 | S2 | 02 | R00 | ACF06 | 099 | 363 | 1314 |  |  |  |  |  |  |  |
| S05TR26017C0 |  | SW-05 ; Final Fix, Inst of Switch/Sockets (TR RM) | 12d | 2012-06-24 | 2012-07-08 | S05TR09901C0, S05TR09503C0 | 20.62d | 0d | ELECTRICAL [256.8 h]; Cost | S05TR26017C0 | SW | C | 05 | TR | ME | 260 | 17 | BILL 9 | B09 | S2 | FF | R00 | ACF07 | 260 |  |  | MEP |  |  | FF |  |  |  |
| S05TR01802C0 |  | SW-05 ; MEP de-snag, FIREM sign-off | 17.88d | 2012-07-08 | 2012-07-29 | S05TR26017C0, S05TR23074C0, S05TR23003C0, S05TR26076C0, S05TR26013C0, S05TR26015C0, S05TR26019C0, S05TR27030C0 | 20.62d | 0d | TESTING & COMMISSIONING [510 h]; Cost | S05CO01851C0 | SW | C | 05 | TR | SC | 018 | 53 | BILL 9 | B09 | S2 | 01 | R00 | ACF07 | 018 |  |  |  |  |  |  |  |  |  |
| S05TR01801C0 |  | SW-05 ; Touch-up & Clean / JV inspection /CIR /De-snag | 23.88d | 2012-07-29 | 2012-08-28 | S05TR01802C0, S05TR08709C0, S05TR09601C0, S05TR09903C0, S05TR09907C0, S05TR09503C0 | 20.62d | 0d | TESTING & COMMISSIONING [128 h]; Cost | S05TR01851C0 | SW | C | 05 | TR | SC | 018 | 51 | BILL 9 | B09 | S2 | 02 | R00 | ACF07 | 018 | 396 |  |  |  |  |  |  |  |  |
| S05TR01803C0 |  | SW-05 ; Consultant's final de-snag inspection | 11.88d | 2012-08-28 | 2012-09-11 | S05TR01801C0 | 20.62d | 12.12d | Labor General [1 h]; Cost | CP3TS01803C0 | SW | C | 05 | TR | SC | 018 | 03 | BILL 9 | B09 | S1 | 03 | R00 | ACF07 | 018 |  |  |  |  |  |  |  |  |  |

| ID | WBS | Activity | Duration | Start | Finish | Predecessors | Complete | Remaining | Planned start | Planned finish | Total float | Free float | Resources | change id | RENZ % COMPLETE | CCAD BUILDING(SET) | CCAD PHASE(SET) | CCAD FLOOR(SET) | CCAD ZONE(SET) | CCAD WORK(SET) | CCAD SECTION(SET) | CCAD SERIAL No.(SET) | CCAD CBS(SET) | CCAD BILL(SET) | CCAD HANDOVER(SET) | CCAD TAG(SET) | CCAD REV(SET) | CCADACF (SET) | CCAD SSCF | Actual Cost | Phase | Area/ Department | Grids | Are | Weight & Nos | Process | Levels | CCAD CSA | Claimed This Month | P_811 | P_711 | U% | user_number8 | user_integer1 | user_integer2 | user_number7 |
| --- | --- | --- | --- | --- | --- | --- | --- | --- | --- | --- | --- | --- | --- | --- | --- | --- | --- | --- | --- | --- | --- | --- | --- | --- | --- | --- | --- | --- | --- | --- | --- | --- | --- | --- | --- | --- | --- | --- | --- | --- | --- | --- | --- | --- | --- | --- |
|  | 06 | **Level 6** |  | 2010-11-06 | 2013-01-19 |  |  |  |  |  |  |  |  |  |  |  |  |  |  |  |  |  |  |  |  |  |  |  |  |  |  |  |  |  |  |  |  |  |  |  |  |  |  |  |  |  |
|  | 01 | **Structure & Envelopment** |  | 2010-11-06 | 2012-06-02 |  |  |  |  |  |  |  |  |  |  |  |  |  |  |  |  |  |  |  |  |  |  |  |  |  |  |  |  |  |  |  |  |  |  |  |  |  |  |  |  |  |
| S06SA03307C0 |  | SW-06 ; Corewall Concrete (Zone SA) | 3d | 2010-11-06 A | 2010-11-13 A | S05SA03307C0 | 100% |  | 2011-01-05 | 2011-01-08 |  |  | CONCRETE [6688 h]; CONCRETE [168 m3]; Cost | S06SA03307C0 | 100 | SW | C | 06 | SA | CT | 033 | 07 | BILL 9 | B09 | S2 | 04 | R00 | ACF03 | 033 |  |  |  |  |  |  |  |  |  |  |  |  |  |  |  |  |  |
| S06SC03305C0 |  | SW-06 ; Corewall Concrete (Zone SC) | 6d | 2010-11-23 A | 2010-12-01 A | S05SC03305C0 | 100% |  | 2011-01-09 | 2011-01-15 |  |  | CONCRETE [6688 h]; CONCRETE [168 m3]; Cost | S06SC03305C0 | 100 | SW | C | 06 | SC | CT | 033 | 05 | BILL 9 | B09 | S2 | 04 | R00 | ACF03 | 033 |  |  |  |  |  |  |  |  |  |  |  |  |  |  |  |  |  |
| S06S105101C0 |  | SW-06 ; Erection of Structural Steel of 6th Floor (Zone S1) | 4.63d | 2010-12-18 A | 2011-03-23 A | S05S105103C0, S06SA03307C0 | 100% |  | 2011-01-24 | 2011-01-29 |  |  | STRUCTURAL STEEL [6696 h]; STRUCTURAL STEEL [225 T(Fe)]; Cost | S06S105101C0 | 100 | SW | C | 06 | S1 | ST | 051 | 01 | BILL 9 | B09 | S2 | 01 | R00 | ACF03 | 051 | 1756740.91 | Z2 | SW | 5TH | C | A8B | EREC | 6FLR | ST |  |  |  |  |  |  |  |  |
| S06S105103C0 |  | SW-06 ; Alignment & welding of 6th Floor (Zone S1) | 5d | 2010-12-24 A | 2011-03-29 A | S06S105101C0 | 100% |  | 2011-01-30 | 2011-02-05 |  |  | STRUCTURAL STEEL [468 h]; Cost | S06S105103C0 | 100 | SW | C | 06 | S1 | ST | 051 | 03 | BILL 9 | B09 | S2 | 02 | R00 | ACF03 | 051 | 195193.43 | Z2 | SW | 5TH | C | A8B | EREC | 6FLR | ST |  |  |  |  |  |  |  |  |
| S06S205101C0 |  | SW-06 ; Erection of Structural Steel of 6th Floor (Zone S2) | 13d | 2011-01-08 A | 2011-05-30 A | S05S205103C0, S06SC03305C0 | 100% |  | 2011-02-12 | 2011-02-27 |  |  | STRUCTURAL STEEL [10518 h]; STRUCTURAL STEEL [354 T(Fe)]; Cost | S06S205101C0 | 100 | SW | C | 06 | S2 | ST | 051 | 01 | BILL 9 | B09 | S2 | 01 | R00 | ACF03 | 051 |  | Z2 | SW | 5TH | C | A8B | EREC | 6FLR | ST |  |  |  |  |  |  |  |  |
| S06S205103C0 |  | SW-06 ; Alignment & welding of 6th Floor (Zone S2) | 8d | 2011-01-18 A | 2011-06-30 A | S06S205101C0 | 100% |  | 2011-03-23 | 2011-04-02 |  |  | STRUCTURAL STEEL [475 h]; Cost | S06S205103C0 | 95 | SW | C | 06 | S2 | ST | 051 | 03 | BILL 9 | B09 | S2 | 02 | R00 | ACF03 | 051 |  | Z2 | SW | 5TH | C | A8B | EREC | 6FLR | ST |  |  |  |  |  |  |  |  |
| S06S305101C0 |  | SW-06 ; Erection of Structural Steel of 6th Floor (Zone S3) | 8d | 2011-01-24 A | 2011-06-29 A | S05S305103C0 | 100% |  | 2011-02-22 | 2011-03-03 |  |  | STRUCTURAL STEEL [4147 h]; STRUCTURAL STEEL [140 T(Fe)]; Cost | S06S305101C0 | 95 | SW | C | 06 | S3 | ST | 051 | 01 | BILL 9 | B09 | S2 | 01 | R00 | ACF03 | 051 |  | Z2 | SW | 5TH | C | A8B | EREC | 6FLR | ST | 208847.12 |  |  |  |  |  |  |  |
| S06S305103C0 |  | SW-06 ; Alignment & welding of 6th Floor (Zone S3) | 7.12d | 2011-02-04 A | 2011-06-29 A | S06S305101C0 | 100% |  | 2011-03-03 | 2011-03-12 |  |  | STRUCTURAL STEEL [1147 h]; Cost | S06S305103C0 | 95 | SW | C | 06 | S3 | ST | 051 | 03 | BILL 9 | B09 | S2 | 02 | R00 | ACF03 | 051 |  | Z2 | SW | 5TH | C | A8B | EREC | 6FLR | ST | 23218.27 |  |  |  |  |  |  |  |
| S06S105305C0 |  | SW-06 ; Metal Decking Lvl - 6 (Zone S1) | 18d | 2011-03-06 A | 2011-04-19 A | S06S105103C0, S07S105101C0 | 100% |  | 2011-03-01 | 2011-03-22 |  |  | METAL DECKING [2607 h]; METAL DECKING [1555 m2]; Cost | S06S105305C0 | 100 | SW | C | 06 | S1 | ST | 053 | 05 | BILL 9 | B09 | S2 | 03 | R00 | ACF03 | 053 |  | Z2 | SW | 5TH | C | A8B | MDEC | 6FLR | ST |  |  |  |  |  |  |  |  |
| S06S205305C0 |  | SW-06 ; Metal Decking Lvl - 6 (Zone S2) | 20d | 2011-03-14 A | 2011-06-30 A | S06S205103C0, S07S205101C0 | 100% |  | 2011-04-06 | 2011-04-30 |  |  | METAL DECKING [3305 h]; METAL DECKING [1971 m2]; Cost | S06S205305C0 | 95 | SW | C | 06 | S2 | ST | 053 | 05 | BILL 9 | B09 | S2 | 03 | R00 | ACF03 | 053 |  | Z2 | SW | 5TH | C | A8B | MDEC | 6FLR | ST |  |  |  |  |  |  |  |  |
| S06S103399C0 |  | SW-06 ; Concrete on Metal Decking Lvl - 6 (Zone S1) | 10d | 2011-04-20 A | 2011-04-28 A | S06S105305C0 | 100% |  | 2011-03-22 | 2011-04-03 |  |  | CONCRETE [5568 h]; CONCRETE [140 m3]; Cost | S06S105335C0 | 100 | SW | C | 06 | S1 | CT | 033 | 99 | BILL 9 | B09 | S2 | 08 | R00 | ACF03 | 033 |  | Z2 | SW | 5TH | C | A8B | MDEC | 6FLR |  |  |  |  |  |  |  |  |  |
| S06S203399C0 |  | SW-06 ; Concrete on Metal Decking Lvl - 6 (Zone S2) | 10d | 2011-04-24 A | 2011-06-30 A | S06S205305C0 | 100% |  | 2011-04-30 | 2011-05-11 |  |  | CONCRETE [8272 h]; CONCRETE [208 m3]; Cost | S06S205335C0 | 90 | SW | C | 06 | S2 | CT | 033 | 99 | BILL 9 | B09 | S2 | 08 | R00 | ACF03 | 033 |  | Z2 | SW | 5TH | C | A8B | MDEC | 6FLR |  |  |  |  |  |  |  |  |  |
| S06S107807C0 |  | SW-06 ; Cementitious Fire Proofing Lvl - 6 (Zone S1) | 10d | 2011-05-01 A | 2011-05-30 A | S07S103399C0 | 100% |  | 2011-05-31 | 2011-06-11 |  |  | CEMENTITIOUS FIREPROOFING [654 h]; CEMENTITIOUS FIREPROOFING [1308 m2]; Cost | S06S107807C0 | 100 | SW | C | 06 | S1 | ST | 078 | 07 | BILL 9 | B09 | S2 | 04 | R00 | ACF03 | 078 |  | Z2 | SW | 5TH | C | A8B | FIRE | 6FLR | ST |  |  |  |  |  |  |  |  |
| S06S207807C0 |  | SW-06 ; Cementitious Fire Proofing Lvl - 6 (Zone S2) | 10d | 2011-05-15 A | 2011-06-30 A | S07S203399C0 | 100% |  | 2011-07-12 | 2011-07-24 |  |  | CEMENTITIOUS FIREPROOFING [830 h]; CEMENTITIOUS FIREPROOFING [1659 m2]; Cost | S06S207807C0 | 95 | SW | C | 06 | S2 | ST | 078 | 07 | BILL 9 | B09 | S2 | 04 | R00 | ACF03 | 078 |  | Z2 | SW | 5TH | C | A8B | FIRE | 6FLR | ST | 10401.31 |  |  |  |  |  |  |  |
| S06S303399C0 |  | SW-06 ; Concrete on Metal Decking Lvl - 6 (Zone S3) | 9d | 2011-05-15 A | 2011-07-31 A | S06S305305C0 | 100% |  | 2011-06-27 | 2011-07-09 |  |  | CONCRETE [13752 h]; CONCRETE [346 m3]; Cost | S06S305335C0 | 90 | SW | C | 06 | S3 | CT | 033 | 99 | BILL 9 | B09 | S2 | 08 | R00 | ACF03 | 033 |  | Z2 | SW | 5TH | C | A8B | MDEC | 6FLR |  | 42066.31 |  |  |  |  |  |  |  |
| S06S305305C0 |  | SW-06 ; Metal Decking Lvl - 6 (Zone S3) | 22d | 2011-05-15 A | 2011-06-21 A | S06S305103C0, S07S305101C0 | 100% |  | 2011-06-01 | 2011-06-27 |  |  | METAL DECKING [6378 h]; METAL DECKING [3805 m2]; Cost | S06S305305C0 | 95 | SW | C | 06 | S3 | ST | 053 | 05 | BILL 9 | B09 | S2 | 03 | R00 | ACF03 | 053 |  | Z2 | SW | 5TH | C | A8B | MDEC | 6FLR | ST | 17820.81 |  |  |  |  |  |  |  |
| S06S307807C0 |  | SW-06 ; Cementitious Fire Proofing Lvl - 6 (Zone S3) | 10d | 2011-05-15 A | 2011-07-31 A | S07S303399C0 | 100% |  | 2011-06-11 | 2011-06-22 |  |  | CEMENTITIOUS FIREPROOFING [1601 h]; CEMENTITIOUS FIREPROOFING [3202 m2]; Cost | S06S307807C0 | 95 | SW | C | 06 | S3 | ST | 078 | 07 | BILL 9 | B09 | S2 | 04 | R00 | ACF03 | 078 |  | Z2 | SW | 5TH | C | A8B | FIRE | 6FLR | ST | 20067.96 |  |  |  |  |  |  |  |
| S06CO04403C0 |  | SW-06 ; C2 Bracket (Common Zone) | 96d | 2011-07-10 A | 2011-10-23 | S06S107807C0, S06S207807C0 FF, S06S307807C0 | 80% | 19.2d | 2011-07-09 | 2011-10-30 | 28.08d | 0d | FACADE CURTAIN WALL 2 [958.6 h]; Cost | S06CO04403C0 |  | SW | C | 06 | CO | FA | 044 | 03 | BILL 9 | B09 | S2 | FC2 | R00 | ACF05 | 044 |  |  |  |  |  |  |  |  | FA |  | 70 | 15 | 70 |  |  |  |  |
| S06CO04405C0 |  | SW-06 ; C2 Transom & Mullion (Common Zone) | 96d | 2011-08-10 A | 2011-10-30 | S06CO04403C0 SS | 73% | 25.92d | 2011-09-01 | 2011-12-28 | 28.08d | 0d | FACADE CURTAIN WALL 2 [3833.7 h]; Cost | S06CO04405C0 |  | SW | C | 06 | CO | FA | 044 | 05 | BILL 9 | B09 | S2 | FC2 | R00 | ACF05 | 044 |  |  |  |  |  |  |  |  | FA |  | 35 | 0 | 73 | 0 | 0 | 0 | 0 |
| S06CO04406C0 |  | SW-06 ; C2 Glazing (Common Zone) | 66d | 2011-08-10 A | 2011-10-30 | S06CO04405C0 SS, S06CO04405C0 FF | 73% | 17.82d | 2011-09-01 | 2011-11-21 | 28.08d | 0d | FACADE CURTAIN WALL 2 [306.8 h]; FACADE CURTAIN WALL 5 [800 h]; FACADE CURTAIN WALL 2 [65.33 m2]; FACADE CURTAIN WALL 5 [170.33 m2]; FACADE TOTAL QUANTITY m2 [235.67 m2]; Cost | S06CO04406C0 |  | SW | C | 06 | CO | FA | 044 | 06 | BILL 9 | B09 | S2 | FC2 | R00 | ACF05 | 044 |  |  |  |  |  |  |  |  | FA |  | 35 | 0 | 73 |  |  |  |  |
| S06CO04415C0 |  | SW-06 ; SG Catwalk Installation (Common Zone) | 74d | 2011-10-30 | 2012-01-31 | SEXCO04403C0 SS, S05CO04415C0 SS |  |  |  |  | 167.08d | 0d | FACADE TOTAL QUANTITY m2 [410 m2]; FACADE METAL PANEL 2 [410 m2]; Labor General [6485 h]; Cost | I05CO04411C0 |  | SW | C | 06 | CO | FA | 044 | 11 | BILL 9 | B09 | S2 | SG | R00 | ACF05 | 044 |  |  |  |  |  |  |  |  | FA |  |  |  |  |  |  |  |  |
| S06CO04425C0 |  | SW-06 ; SO Storefront System Installation (Common Zone) | 54d | 2012-04-01 | 2012-06-02 | S06CO04403C0, DR5CO04405C0 |  |  |  |  | 225d | 0d | PARTITIONS [993 m]; Labor General [28041 h]; Cost | I05CO04411C0 |  | SW | C | 06 | CO | FA | 044 | 11 | BILL 9 | B09 | S2 | SO | R00 | ACF05 | 044 |  |  |  |  |  |  |  |  | FA |  |  |  |  |  |  |  |  |

| ID | WBS | Activity | Duration | Start | Finish | Predecessors | Complete | Remaining | Planned start | Planned finish | Total float | Free float | Resources | Cost | Actual cost | change id | RENZ % COMPLETE | Claimed This Month | CCAD BUILDING(SET) | CCAD PHASE(SET) | CCAD FLOOR(SET) | CCAD ZONE(SET) | CCAD WORK(SET) | CCAD SECTION(SET) | CCAD SERIAL No.(SET) | CCAD SUB ZONE MEP(SET) | CCAD CBS(SET) | CCAD BILL(SET) | CCAD HANDOVER(SET) | CCAD TAG(SET) | CCAD REV(SET) | CCADACF (SET) | CCAD CSA | CCAD SSCF | Act Selector % | user_number8 | user_integer1 | user_integer2 | user_number7 | Change Order # | NEW ACTIVITY ID | P_811 | P_711 | U% | July2011 Target% Complete | CCAD DIVISION(SET) | CCAD MEQ | R3 Finish |
| --- | --- | --- | --- | --- | --- | --- | --- | --- | --- | --- | --- | --- | --- | --- | --- | --- | --- | --- | --- | --- | --- | --- | --- | --- | --- | --- | --- | --- | --- | --- | --- | --- | --- | --- | --- | --- | --- | --- | --- | --- | --- | --- | --- | --- | --- | --- | --- | --- |
|  | 02 | **Public Area ( Elev.Lobby & Corridors )** |  | 2011-04-16 | 2012-12-23 |  |  |  |  |  |  |  |  |  |  |  |  |  |  |  |  |  |  |  |  |  |  |  |  |  |  |  |  |  |  |  |  |  |  |  |  |  |  |  |  |  |  |  |
| S06PA23001C0 |  | SW-06 ; 1st Fix, Inst. of Supports for MEP (Public Area) | 23d | 2011-04-16 A | 2011-06-18 A | S06S107807C0, S06S207807C0, S06S307807C0 | 100% |  | 2011-06-13 | 2011-07-11 |  |  | MECHANICAL [536.4 h]; Cost [30275.7 AED] | 30,275.67 | 30,275.67 | S06PA23001C0 | 60 | 14047.8 | SW | C | 06 | PA | ME | 230 | 01 | 1S | BILL 9 | B09 | S2 | 1F | R00 | ACF04 | MEP | 230 | M1F |  |  |  |  |  |  |  |  |  |  |  |  |  |
| S06PA09201C0 |  | SW-06 ; Metal Studs (Public Area) | 75d | 2011-05-15 A | 2011-11-15 | S06PA23001C0 SS+12d, SAFCI09201R02 FS+58d | 75% | 18.75d | 2011-07-24 | 2011-10-22 | 21.25d | 0d | PARTITIONS [4561 h]; PARTITIONS - Metal Studs [436 m]; Cost |  |  | S06PA09201C0 | 5 | 164108.61 | SW | C | 06 | PA | PT | 092 | 01 |  | BILL 9 | B09 | S2 | 1F | R00 | ACF06 | GP | 092 | PMS | 0 | 0 | 0 | 0 | 313 | 944 | 70 | 50 | 75 |  |  |  |  |
| S06PA26001C0 |  | SW-06 ; 1st Fix, Inst of Trunking/Conduiting (Public Area) | 66d | 2011-05-17 A | 2011-11-10 | S06PA23001C0, S06S107807C0, S06S207807C0, S06S307807C0 | 50% | 33d | 2011-08-15 | 2011-11-02 | 56.5d | 0d | ELECTRICAL [447.6 h]; Cost [24105.1 AED] | 24,105.11 | 12,052.55 | S06PA26001C0 | 10 | 2798.04 | SW | C | 06 | PA | ME | 260 | 01 | 1S | BILL 9 | B09 | S2 | 1F | R00 | ACF04 | MEP | 260 | M1F | 0 | 0 | 0 | 0 |  |  | 30 | 25 | 50 | 50 |  |  |  |
| S06PA22019C0 |  | SW-06 ; 1st Fix, Inst of Drainage pipe (ceiling) (Public Area) | 90d | 2011-06-07 A | 2011-11-14 | S06PA23001C0, S06PA26013C0 SS+14d | 60% | 36d | 2011-07-19 | 2011-11-03 | 56.5d | 0d | PLUMBING [310.8 h]; Cost [16770.4 AED] | 16,770.39 | 10,062.23 | S06PA22019C0 |  | 9723.12 | SW | C | 06 | PA | ME | 220 | 19 | 1S | BILL 9 | B09 | S2 | 1F | R00 | ACF04 | MEP | 220 | M1F | 0 | 0 | 0 | 0 |  |  | 60 | 20 | 60 | 70 |  |  |  |
| S06PA21111C0 |  | SW-06 ; 1st Fix, Inst of Sprinkler main pipe (Public Area) | 90d | 2011-06-08 A | 2011-11-09 | S06PA22005C0 SS+14d, S06PA23001C0 | 65% | 31.5d | 2011-08-18 | 2011-12-10 | 56.5d | 0d | MECHANICAL [793.2 h]; Cost [43268 AED] | 43,267.97 | 28,124.18 | S06PA21111C0 |  | 15062.68 | SW | C | 06 | PA | ME | 211 | 11 | 1S | BILL 9 | B09 | S2 | 1F | R00 | ACF04 | MEP | 211 | M1F | 0 | 0 | 0 | 0 |  |  | 65 | 40 | 65 | 50 |  |  |  |
| S06PA26013C0 |  | SW-06 ; 1st Fix, Inst of Cable Tray (Public Area) | 60d | 2011-06-08 A | 2011-11-03 | S06PA23001C0, S06PA27010C0 SS+10d, S06S107807C0, S06S207807C0, S06S307807C0 | 50% | 30d | 2011-07-18 | 2011-09-28 | 56.5d | 0d | ELECTRICAL [231.6 h]; Cost [13047.4 AED] | 13,047.37 | 6,523.68 | S06PA26013C0 |  | 7572.48 | SW | C | 06 | PA | ME | 260 | 13 | 1S | BILL 9 | B09 | S2 | 1F | R00 | ACF04 | MEP | 260 | M1F | 0 | 0 | 0 | 0 |  |  |  |  | 50 | 60 |  |  |  |
| S06PA09203C0 |  | SW-06 ; Partitions early wall & 1st face (Public Area) | 75d | 2011-06-15 A | 2012-01-02 | S06PA09201C0 | 50% | 37.5d | 2011-07-06 | 2011-10-04 | 37.75d | 16.5d | PARTITIONS [436 m]; PARTITIONS [3562 h]; Cost |  |  | S06PA09203C0 |  | 17673.23 | SW | C | 06 | PA | PT | 092 | 03 |  | BILL 9 | B09 | S2 | 2F | R00 | ACF06 | GP | 092 | P1F | 0 | 0 | 0 | 0 | 314 | 945 | 50 | 30 | 50 |  |  |  |  |
| S06PA21117C0 |  | SW-06 ; 1st Fix, Inst of Sprinkler branch pipe (Public Area) | 90d | 2011-07-10 A | 2011-12-25 | S06PA09201C0, S06PA21111C0 | 65% | 31.5d | 2011-09-12 | 2012-01-02 | 114.25d | 88.55d | MECHANICAL [682.8 h]; Cost [37306.8 AED] | 37,306.8 | 24,249.42 | S06PA21117C0 |  |  | SW | C | 06 | PA | ME | 211 | 17 | 1S | BILL 9 | B09 | S2 | 1F | R00 | ACF04 | MEP | 211 | M1F | 0 | 0 | 0 | 0 |  |  | 65 | 35 | 65 | 55 |  |  |  |
| S06PA22005C0 |  | SW-06 ; 1st Fix, Inst of Water supply pipe (ceiling) (Public Area) | 60d | 2011-07-10 A | 2011-11-03 | S06PA22019C0 SS+12d, S06PA23001C0 | 50% | 30d | 2011-07-12 | 2011-09-22 | 56.5d | 0d | PLUMBING [1688.4 h]; Cost [162261 AED] | 162,261.32 | 81,130.66 | S06PA22005C0 |  |  | SW | C | 06 | PA | ME | 220 | 05 | 1S | BILL 9 | B09 | S2 | 1F | R00 | ACF04 | MEP | 220 | M1F | 0 | 0 | 0 | 0 |  |  |  |  | 30 | 50 |  |  |  |
| S06PA23017C0 |  | SW-06 ; 1st Fix, Inst of CHW pipe (Public Area) | 72d | 2011-07-10 A | 2011-11-14 | S06PA21111C0 SS+12d, S06PA23001C0 | 50% | 36d | 2011-07-28 | 2011-10-23 | 56.5d | 0d | MECHANICAL [1687.2 h]; Cost [92145.2 AED] | 92,145.18 | 46,072.59 | S06PA23017C0 |  |  | SW | C | 06 | PA | ME | 230 | 17 | 1S | BILL 9 | B09 | S2 | 1F | R00 | ACF04 | MEP | 230 | M1F | 0 | 0 | 0 | 0 |  |  | 40 | 30 | 40 | 45 |  |  |  |
| S06PA23023C0 |  | SW-06 ; 1st Fix, Inst of Main Ducting (Public Area) | 66d | 2011-07-10 A | 2011-11-10 | S06PA23001C0, S06PA23017C0 SS+10d | 50% | 33d | 2011-08-09 | 2011-10-27 | 101.5d | 0d | MECHANICAL [6650.4 h]; Cost [363211 AED] | 363,210.66 | 181,605.33 | S06PA23023C0 |  |  | SW | C | 06 | PA | ME | 230 | 23 | 1S | BILL 9 | B09 | S2 | 1F | R00 | ACF04 | MEP | 230 | M1F | 0 | 0 | 0 | 0 |  |  | 30 | 25 | 40 | 25 |  |  |  |
| S06PA27010C0 |  | SW-06 ; 1st Fix, Inst of Trunking for ELV system (Public Area) | 72d | 2011-07-10 A | 2011-11-14 | S06PA23001C0, S06PA26001C0 SS+14d, S06S107807C0, S06S207807C0, S06S307807C0 | 50% | 36d | 2011-06-30 | 2011-09-25 | 56.5d | 0d | ELECTRICAL [991.2 h]; Cost [51056.8 AED] | 51,056.81 | 25,528.4 | S06PA27010C0 |  |  | SW | C | 06 | PA | ME | 270 | 10 | 1S | BILL 9 | B09 | S2 | 1F | R00 | ACF04 | MEP | 270 | M1F | 0 | 0 | 0 | 0 |  |  | 35 | 25 | 50 | 45 |  |  |  |
| S06PA23008C0 |  | SW-06 ; 1st Fix, Inst of VCD's/FD's (Public Area) | 48d | 2011-11-12 | 2012-01-09 | S06PA23023C0 |  |  |  |  | 101.5d | 75.8d | MECHANICAL [1111.2 h]; Cost |  |  | S06PA23008C0 |  |  | SW | C | 06 | PA | ME | 230 | 08 | 1S | BILL 9 | B09 | S2 | 1F | R00 | ACF04 | MEP | 230 | M1F |  |  |  |  |  |  |  |  |  |  |  |  |  |
| S06PA23009C0 |  | SW-06 ; 2nd Fix, Inst of VAV'S CHW connection (Public Area) | 42d | 2011-11-15 | 2012-01-05 | S06PA23017C0 |  |  |  |  | 56.5d | 0d | MECHANICAL [1282.8 h]; Cost |  |  | S06PA23009C0 |  |  | SW | C | 06 | PA | ME | 230 | 09 | 2n | BILL 9 | B09 | S2 | 2F | R00 | ACF07 | MEP | 230 |  |  |  |  |  |  |  |  |  | 0 |  |  |  |  |
| S06PA27001C0 |  | SW-06 ; 1st Fix, Wiring/ Cabling work (Public Area) | 48d | 2011-11-15 | 2012-01-12 | S06PA26001C0, S06PA26013C0, S06PA27010C0 |  |  |  |  | 98.5d | 72.8d | ELECTRICAL [241.2 h]; Cost |  |  | S06PA27001C0 |  |  | SW | C | 06 | PA | ME | 270 | 01 | 1S | BILL 9 | B09 | S2 | 1F | R00 | ACF04 | MEP | 270 | M1F |  |  |  |  |  |  |  |  |  |  |  |  |  |
| S06PA22011C0 |  | SW-06 ; 2nd Fix, Drainage/Water pipe (wall) (Public Area) | 42d | 2011-11-15 | 2012-01-07 | S06PA09201C0 |  |  |  |  | 27.25d | 6d | PLUMBING [864 h]; Cost |  |  | S06PA22011C0 |  |  | SW | C | 06 | PA | ME | 220 | 11 | 2n | BILL 9 | B09 | S2 | 2F | R00 | ACF07 | MEP | 220 |  |  |  |  |  |  |  |  |  |  | 85 |  |  |  |
| S06PA26009C0 |  | SW-06 ; 2nd Fix, Inst of Wall conduites (Public Area) | 48d | 2011-11-15 | 2012-01-14 | S06PA09201C0 |  |  |  |  | 21.25d | 0d | ELECTRICAL [3262.8 h]; Cost |  |  | S06PA26009C0 |  |  | SW | C | 06 | PA | ME | 260 | 09 | 2n | BILL 9 | B09 | S2 | 2F | R00 | ACF07 | MEP | 260 |  |  |  |  |  |  |  |  |  |  | 30 |  |  |  |
| S06PA08103C0 |  | SW-06 ; Door Frames (Public Area) | 36d | 2011-11-27 | 2012-01-09 | S06PA09201C0, GNHE08101C0 FS+69d, S06F108103C0 SS+3d |  |  |  |  | 35.5d | 0d | ASSORTED DOORS [191 h]; Cost |  |  | S06PA08103C0 |  |  | SW | C | 06 | PA | DO | 081 | 03 |  | BILL 9 | B09 | S2 | DF | R00 | ACF06 |  | 081 |  |  |  |  |  | 316 | 947 |  |  |  |  | 08 |  |  |
| S06PA23015C0 |  | SW-06 ; 2nd Fix, Insulation of CHW pipe & Duct (Public Area) | 48d | 2012-01-07 | 2012-03-03 | S06PA23009C0, S06PA23017C0, S06PA23023C0 |  |  |  |  | 56.5d | 30.8d | MECHANICAL [3980.4 h]; Cost |  |  | S06PA23015C0 |  |  | SW | C | 06 | PA | ME | 230 | 15 | 2n | BILL 9 | B09 | S2 | 2F | R00 | ACF07 | MEP | 230 |  |  |  |  |  |  |  |  |  |  |  |  |  |  |
| S06PA01005C0 |  | SW-06 ; 2nd, Wall Inspection by Consultant (Public Area) | 6d | 2012-01-14 | 2012-01-21 | S06PA22011C0, S06PA26009C0 |  |  |  |  | 21.25d | 0d | Labor General [0.6 h]; Cost |  |  | S06PA01005C0 |  |  | SW | C | 06 | PA | ME | 010 | 05 | 2n | BILL 9 | B09 | S2 | WI | R00 | ACF07 | MEP | 010 |  |  |  |  |  |  |  |  |  |  |  |  |  |  |
| S06PA09205C0 |  | SW-06 ; Partitions Closing (Public Area) | 36.05d | 2012-01-21 | 2012-03-04 | S06PA01005C0, S06PA09203C0, S06PA22005C0, S06PA22019C0, SAFOA09212C1 FF, SAFCI22001R02 FS+58d, S06PA08103C0 FF |  |  |  |  | 21.25d | 0d | PARTITIONS [436 m]; PARTITIONS [4557 h]; Cost |  |  | S06PA09205C0 |  |  | SW | C | 06 | PA | PT | 092 | 05 |  | BILL 9 | B09 | S2 | FF | R00 | ACF06 | GP | 092 | P2F |  |  |  |  | 315 | 946 |  |  |  |  |  |  |  |
| S06PA09901C0 |  | SW-06 ; Wall Prime & 1st coat (Public Area) | 30d | 2012-03-04 | 2012-04-08 | S06PA09205C0 |  |  |  |  | 25.7d | 0d | WALL PAINT [928 h]; WALL PAINT [1158 m2]; Cost |  |  | S06PA09901C0 |  |  | SW | C | 06 | PA | PA | 099 | 01 |  | BILL 9 | B09 | S2 | 01 | R00 | ACF06 |  | 099 |  |  |  |  |  | 328 | 956 |  |  |  |  |  |  |  |
| S06PA26005C0 |  | SW-06 ; 2nd Fix, Wiring for Power/Lighting/Emergency (Public Area) | 42d | 2012-03-04 | 2012-04-22 | S06PA09205C0 |  |  |  |  | 109.7d | 0d | ELECTRICAL [241.2 h]; Cost |  |  | S06PA26005C0 |  |  | SW | C | 06 | PA | ME | 260 | 05 | 2n | BILL 9 | B09 | S2 | 2F | R00 | ACF07 | MEP | 260 |  |  |  |  |  |  |  |  |  |  |  |  |  |  |
| S06PA26007C0 |  | SW-06 ; 2nd Fix, Cable Pulling (Public Area) | 42d | 2012-03-04 | 2012-04-22 | S06PA09201C0 SS+6d, S06PA09205C0 |  |  |  |  | 151.7d | 126d | ELECTRICAL [1532.4 h]; Cost |  |  | S06PA26007C0 |  |  | SW | C | 06 | PA | ME | 260 | 07 | 2n | BILL 9 | B09 | S2 | 2F | R00 | ACF07 | MEP | 260 |  |  |  |  |  |  |  |  |  |  | 15 |  |  |  |
| S06PA26011C0 |  | SW-06 ; 2nd Fix, Inst of Equipment (DB) (Public Area) | 48d | 2012-03-04 | 2012-04-29 | S06PA09205C0 |  |  |  |  | 91.7d | 66d | ELECTRICAL [646.8 h]; Cost |  |  | S06PA26011C0 |  |  | SW | C | 06 | PA | ME | 260 | 11 | 2n | BILL 9 | B09 | S2 | 2F | R00 | ACF04 | MEP | 260 |  |  |  |  |  |  |  |  |  |  |  |  | E |  |
| S06PA26053C0 |  | SW-06 ; 2nd Fix, Wiring / Cabling (Public Area) | 42d | 2012-03-04 | 2012-04-22 | S06PA09203C0, S06PA09205C0 |  |  |  |  | 49.7d | 24d | ELECTRICAL [241.2 h]; Cost |  |  | S06PA26053C0 |  |  | SW | C | 06 | PA | ME | 260 | 53 | 2n | BILL 9 | B09 | S2 | 2F | R00 | ACF07 | MEP | 260 |  |  |  |  |  | 389 | 977 |  |  |  |  |  |  |  |
| S06PA05501C0 |  | SW-06 ; Handrails & balustrade (Public Area) | 35.25d | 2012-04-08 | 2012-05-20 | S06PA09901C0, SAFT1505509C0, SAFT105509C0, SAFT1105509C0, SAFT2305509C0 |  |  |  |  | 32.45d | 0.75d | SECONDARY STEEL [202 h]; Cost |  |  | S06PA05501C0 |  |  | SW | C | 06 | PA | SW | 055 | 01 |  | BILL 9 | B09 | S2 | 01 | R00 | ACF03 |  | a |  |  |  |  |  |  |  |  |  |  |  |  |  |  |
| S06PA09501C0 |  | SW-06 ; Ceiling Grid and Service Tile (Public Area) | 36d | 2012-04-08 | 2012-05-20 | S06PA09205C0 FS+15d, S06PA21117C0, S06PA23008C0, S06PA23009C0, S06PA23015C0, S06PA27001C0, SAFCI22002R02 FS+58d, S06PA26053C0 FF, S06PA09901C0 |  |  |  |  | 25.7d | 0d | CEILING GRID FOR GYPSUM [905.82 h]; CEILING GRID FOR GYPSUM [77.47 m2]; Cost |  |  | S06PA09501C0 |  |  | SW | C | 06 | PA | CE | 095 | 01 |  | BILL 9 | B09 | S2 | 01 | R00 | ACF06 |  | 095 |  |  |  |  |  | 323 | 952 |  |  |  |  |  |  | R3 |
| S06PA26015C0 |  | SW-06 ; Final Fix, Termination & Gladding of Cables (Public Area) | 36d | 2012-04-22 | 2012-06-03 | S06PA26005C0 |  |  |  |  | 109.7d | 66d | ELECTRICAL [85.2 h]; Cost |  |  | S06PA26015C0 |  |  | SW | C | 06 | PA | ME | 260 | 15 | FF | BILL 9 | B09 | S2 | FF | R00 | ACF07 | MEP | 260 |  |  |  |  |  |  |  |  |  |  |  |  |  |  |
| S06PA09601C0 |  | SW-06 ; Flooring (Rubber & etc) (Public Area) | 42d | 2012-05-20 | 2012-07-09 | S06PA09901C0, SAFCI22002R02 FS+58d, S06PA09501C0 |  |  |  |  | 31.7d | 0d | RUBBER FLOOR [144 h]; RUBBER FLOOR [354 m2]; Cost |  |  | S06PA09601C0 |  |  | SW | C | 06 | PA | FF | 096 | 01 |  | BILL 9 | B09 | S2 | 03 | R00 | ACF06 |  | RF |  |  |  |  |  | 326 | 955 |  |  |  |  |  |  | R3 |
| S06PA09602C0 |  | SW-06 ; Flooring (stone) (Public Area) | 42d | 2012-05-20 | 2012-07-09 | S06PA09901C0, SAFCI22002R02 FS+58d, S06PA09501C0, S06PA05501C0 |  |  |  |  | 31.7d | 0d | STONE FLOOR [60 h]; STONE FLOOR [64 m2]; Cost |  |  | S06PA09601C0 |  |  | SW | C | 06 | PA | FF | 096 | 01 |  | BILL 9 | B09 | S2 | 09 | R00 | ACF06 |  | ST |  |  |  |  |  | 326 | 955 |  |  |  |  |  |  | R3 |
| S06PA09905C0 |  | SW-06 ; Ceiling Prime & 1st coat (Public Area) | 30d | 2012-05-20 | 2012-06-25 | S06PA09501C0 |  |  |  |  | 119.45d | 12d | CEILING PAINT [58 h]; CEILING PAINT [71 m2]; Cost |  |  | S06PA09905C0 |  |  | SW | C | 06 | PA | PA | 099 | 05 |  | BILL 9 | B09 | S2 | 01 | R00 | ACF06 |  | 099 |  |  |  |  |  | 330 | 958 |  |  |  |  |  |  |  |
| S06PA21115C0 |  | SW-06 ; 2nd Fix, Inst of Sprinkler droppers (Public Area) | 42d | 2012-05-20 | 2012-07-09 | S06PA09501C0 |  |  |  |  | 43.7d | 0d | MECHANICAL [1903.2 h]; Cost |  |  | S06PA21115C0 |  |  | SW | C | 06 | PA | ME | 211 | 15 | 2n | BILL 9 | B09 | S2 | 2F | R00 | ACF07 | MEP | 211 |  |  |  |  |  |  |  |  |  |  |  |  |  |  |
| S06PA23021C0 |  | SW-06 ; 2nd Fix, Inst of Flexible Duct & Plenum boxes (Public Area) | 42d | 2012-05-20 | 2012-07-09 | S06PA09205C0, S06PA09501C0 |  |  |  |  | 43.7d | 0d | MECHANICAL [430.8 h]; Cost |  |  | S06PA23021C0 |  |  | SW | C | 06 | PA | ME | 230 | 21 | 2n | BILL 9 | B09 | S2 | 2F | R00 | ACF07 | MEP | 230 |  |  |  |  |  |  |  |  |  |  |  |  |  |  |
| S06PA26017C0 |  | SW-06 ; Final Fix, Inst of Ceiling rose (Public Area) | 36d | 2012-05-20 | 2012-07-02 | S06PA09501C0 |  |  |  |  | 43.7d | 0d | ELECTRICAL [36 h]; Cost |  |  | S06PA26017C0 |  |  | SW | C | 06 | PA | ME | 260 | 17 | FF | BILL 9 | B09 | S2 | FF | R00 | ACF07 | MEP | 260 |  |  |  |  |  |  |  |  |  |  |  |  |  |  |
| S06PA27002C0 |  | SW-06 ; 2nd Fix, Wiring Droppers (Public Area) | 42d | 2012-05-20 | 2012-07-09 | S06PA09501C0 |  |  |  |  | 43.7d | 0d | ELECTRICAL [241.2 h]; Cost |  |  | S06PA27002C0 |  |  | SW | C | 06 | PA | ME | 270 | 02 | 2n | BILL 9 | B09 | S2 | 2F | R00 | ACF07 | MEP | 270 |  |  |  |  |  |  |  |  |  |  |  |  |  |  |
| S06PA27020C0 |  | SW-06 ; 2nd Fix, Inst of ELV Equipment (Panels) (Public Area) | 48d | 2012-05-20 | 2012-07-16 | S06PA09205C0, S06PA09501C0 |  |  |  |  | 25.7d | 0d | ELECTRICAL [1868.4 h]; Cost |  |  | S06PA27020C0 |  |  | SW | C | 06 | PA | ME | 270 | 20 | 2n | BILL 9 | B09 | S2 | 2F | R00 | ACF04 | MEP | 270 |  |  |  |  |  |  |  |  |  |  |  |  | E |  |
| S06PA26003C0 |  | SW-06 ; Final Fix, Inst of Light fittings (Public Area) | 42d | 2012-07-02 | 2012-08-22 | S06PA09501C0, S06PA26017C0 |  |  |  |  | 43.7d | 0d | ELECTRICAL [4813.2 h]; Cost |  |  | S06PA26003C0 |  |  | SW | C | 06 | PA | ME | 260 | 03 | FF | BILL 9 | B09 | S2 | FF | R00 | ACF07 | MEP | 260 |  |  |  |  |  |  |  |  |  |  |  |  |  |  |
| S06PA08107C0 |  | SW-06 ; Doors (Public Area) | 36d | 2012-07-09 | 2012-08-22 | S06PA08103C0, S06PA09901C0, S06PA09601C0, S06PA09602C0 |  |  |  |  | 77.2d | 0d | ASSORTED DOORS [430 h]; ASSORTED DOORS [43 no]; Cost |  |  | S06PA08107C0 |  |  | SW | C | 06 | PA | DO | 081 | 07 |  | BILL 9 | B09 | S2 | DR | R00 | ACF06 |  | 081 |  |  |  |  |  | 317 | 948 |  |  |  |  | 08 |  |  |
| S06PA09903C0 |  | SW-06 ; Wall Final Paint (Public Area) | 30d | 2012-07-09 | 2012-08-13 | S06PA09901C0, S06PA09905C0, S06PA09602C0 |  |  |  |  | 107.45d | 60d | WALL PAINT [500 h]; WALL PAINT [623 m2]; Cost |  |  | S06PA09903C0 |  |  | SW | C | 06 | PA | PA | 099 | 03 |  | BILL 9 | B09 | S2 | 02 | R00 | ACF06 |  | 099 |  |  |  |  |  | 329 | 957 |  |  |  |  |  |  |  |
| S06PA21113C0 |  | SW-06 ; Final Fix, Inst of Sprinklers head/ Extinguisher (Public Area) | 36d | 2012-07-09 | 2012-08-22 | S06PA09501C0, S06PA21115C0 |  |  |  |  | 43.7d | 0d | MECHANICAL [237.6 h]; Cost |  |  | S06PA21113C0 |  |  | SW | C | 06 | PA | ME | 211 | 13 | FF | BILL 9 | B09 | S2 | FF | R00 | ACF07 | MEP | 211 |  |  |  |  |  |  |  |  |  |  |  |  |  |  |
| S06PA23019C0 |  | SW-06 ; Final Fix, Inst of Grilles & Diffusers (Public Area) | 36d | 2012-07-09 | 2012-08-22 | S06PA09501C0, S06PA23021C0 |  |  |  |  | 43.7d | 0d | MECHANICAL [835.2 h]; Cost |  |  | S06PA23019C0 |  |  | SW | C | 06 | PA | ME | 230 | 19 | FF | BILL 9 | B09 | S2 | FF | R00 | ACF07 | MEP | 230 |  |  |  |  |  |  |  |  |  |  |  |  |  |  |
| S06PA27030C0 |  | SW-06 ; Final Fix, Inst of ELV devise (Detector/Speaker) (Public Area) | 36d | 2012-07-09 | 2012-08-22 | S06PA09501C0, S06PA27002C0 |  |  |  |  | 43.7d | 0d | ELECTRICAL [1348.8 h]; Cost |  |  | S06PA27030C0 |  |  | SW | C | 06 | PA | ME | 270 | 30 | FF | BILL 9 | B09 | S2 | FF | R00 | ACF07 | MEP | 270 |  |  |  |  |  |  |  |  |  |  |  |  |  |  |
| S06PA09701C0 |  | SW-06 ; Wall finishes (ST, WD, WC) (Public Area) | 54d | 2012-07-16 | 2012-09-19 | S06PA26011C0, S06PA27020C0, SVT3414211C0, SVT4114211C0, SVT4314211C0, TVT3114211C0, TVT3214255C0, TVT3314245C0, SAFCI22002R02 FS+158d, S06PA09601C0, S06PA09602C0 |  |  |  |  | 25.7d | 0d | ASSORTED WALL FINISH [952 h]; ASSORTED WALL FINISH [1093 m2]; Cost |  |  | S06PA09701C0 |  |  | SW | C | 06 | PA | WF | 097 | 01 |  | BILL 9 | B09 | S2 | 01 | R00 | ACF06 |  | 097 |  |  |  |  |  | 105 | 1002 |  |  |  |  |  |  |  |
| S06PA01006C0 |  | SW-06 ; 2nd, Ceiling Inspection by Consultants (Public Area) | 6d | 2012-08-22 | 2012-08-29 | S06PA21115C0, S06PA23009C0, S06PA23015C0, S06PA27002C0, S06PA09501C0, S06PA21113C0, S06PA23019C0, S06PA26003C0, S06PA26017C0, S06PA27030C0, S06PA26015C0 |  |  |  |  | 43.7d | 18d | Labor General [0.6 h]; Cost |  |  | S06PA01006C0 |  |  | SW | C | 06 | PA | ME | 010 | 06 | 2n | BILL 9 | B09 | S2 | CI | R00 | ACF07 | MEP | 010 |  |  |  |  |  |  |  |  |  |  |  |  |  |  |
| S06PA08709C0 |  | SW-06 ; Ironmongery (Public Area) | 24.25d | 2012-08-22 | 2012-09-20 | S06PA08107C0 |  |  |  |  | 77.2d | 51.5d | IRONMONGERY [440 h]; IRONMONGERY [44 no]; Cost |  |  | S06PA08709C0 |  |  | SW | C | 06 | PA | DO | 087 | 09 |  | BILL 9 | B09 | S2 | IM | R00 | ACF06 |  | 087 |  |  |  |  |  | 322 | 951 |  |  |  |  | 08 |  |  |
| S06PA09503C0 |  | SW-06 ; Ceiling closure - ACT/Gypsum (Public Area) | 21.75d | 2012-09-19 | 2012-10-15 | S06PA01006C0, S06PA21115C0, S06PA26005C0, S06PA27001C0, S06PA27002C0, SAFOA09511C1 FF, S06PA09701C0, S06PA23021C0, S06PA26007C0 |  |  |  |  | 25.7d | 0d | ASSORTED CEILING FINISH [853.62 h]; CEILING GYPSUM [25.42 h]; ASSORTED CEILING FINISH [1388 m2]; CEILING GYPSUM [77 m2]; Cost |  |  | S06PA09503C0 |  |  | SW | C | 06 | PA | CE | 095 | 03 |  | BILL 9 | B09 | S2 | 02 | R00 | ACF06 |  | 095 |  |  |  |  |  | 324 | 953 |  |  |  |  |  |  | R3 |
| S06PA11001C0 |  | SW-06 ; Wall Protection (WP, CG, WG, FCG) (Public Area) | 24d | 2012-09-19 | 2012-10-17 | S06PA09701C0, S06PA09903C0 SS |  |  |  |  | 53.45d | 27.75d | Labor General [2 h]; Cost |  |  | S06PA11001C0 |  |  | SW | C | 06 | PA | WF | 110 | 01 |  | BILL 9 | B09 | S2 | 03 | R00 | ACF08 |  | b |  |  |  |  |  | 326 | 1001 |  |  |  |  |  |  |  |
| S06PA11009C0 |  | SW-06 ; Signage (Public Area) | 15d | 2012-09-19 | 2012-10-07 | S06PA09701C0 |  |  |  |  | 62.45d | 36.75d | SIGNAGES [184 h]; SIGNAGES [184.41 no]; Cost |  |  | S06PA11009C0 |  |  | SW | C | 06 | PA | SA | 110 | 09 |  | BILL 9 | B09 | S2 | 09 | R00 | ACF08 |  | c |  |  |  |  |  | 322 | 951 |  |  |  |  | 08 |  |  |
| S06PA09907C0 |  | SW-06 ; Ceiling Final paint (Public Area) | 18d | 2012-10-15 | 2012-11-07 | S06PA09601C0, S06PA09905C0, S06PA09602C0, S06PA09503C0 |  |  |  |  | 37.7d | 12d | CEILING PAINT [31 h]; CEILING PAINT [38 m2]; Cost |  |  | S06PA09907C0 |  |  | SW | C | 06 | PA | PA | 099 | 07 |  | BILL 9 | B09 | S2 | 02 | R00 | ACF06 |  | 099 |  |  |  |  |  | 331 | 959 |  |  |  |  |  |  |  |
| S06PA26019C0 |  | SW-06 ; Final Fix, Inst of Switch/Sockets (Public Area) | 18d | 2012-10-15 | 2012-11-07 | S06PA09901C0, S06PA09503C0 |  |  |  |  | 25.7d | 0d | ELECTRICAL [256.8 h]; Cost |  |  | S06PA26019C0 |  |  | SW | C | 06 | PA | ME | 260 | 19 | FF | BILL 9 | B09 | S2 | FF | R00 | ACF07 | MEP | 260 |  |  |  |  |  |  |  |  |  |  |  |  |  |  |

| ID | WBS | Activity | Duration | Start | Finish | Predecessors | Complete | Remaining | Planned start | Planned finish | Total float | Free float | Resources | Cost | Actual cost | change id | CCAD BUILDING(SET) | CCAD PHASE(SET) | CCAD FLOOR(SET) | CCAD ZONE(SET) | CCAD WORK(SET) | CCAD SECTION(SET) | CCAD SERIAL No.(SET) | CCAD CBS(SET) | CCAD BILL(SET) | CCAD HANDOVER(SET) | CCAD TAG(SET) | CCAD REV(SET) | CCADACF (SET) | CCAD SSCF | user_number8 | user_integer1 | user_integer2 | user_number7 | Change Order # | NEW ACTIVITY ID | RENZ % COMPLETE | Claimed This Month | P_811 | P_711 | U% | CCAD CSA | Act Selector % | CCAD SUB ZONE MEP(SET) | July2011 Target% Complete | CCAD DIVISION(SET) | CCAD MEQ |
| --- | --- | --- | --- | --- | --- | --- | --- | --- | --- | --- | --- | --- | --- | --- | --- | --- | --- | --- | --- | --- | --- | --- | --- | --- | --- | --- | --- | --- | --- | --- | --- | --- | --- | --- | --- | --- | --- | --- | --- | --- | --- | --- | --- | --- | --- | --- | --- |
|  | 10 | **Precommissioning Tesing & snagging (Public Area)** |  | 2012-11-07 | 2012-12-23 |  |  |  |  |  |  |  |  |  |  |  |  |  |  |  |  |  |  |  |  |  |  |  |  |  |  |  |  |  |  |  |  |  |  |  |  |  |  |  |  |  |  |
| S06TS01812C0 |  | SW-06 ; MEP de-snag, FIREM sign-off | 12d | 2012-11-07 | 2012-11-22 | S06PA26015C0, S06PA21113C0, S06PA23019C0, S06PA26017C0, S06PA26003C0, S06PA27030C0, S06PA26019C0, S06PA09503C0 |  |  |  |  | 25.7d | 0d | TESTING & COMMISSIONING [510 h]; Cost |  |  | S06TS01801C0 | SW | C | 06 | TS | SC | 018 | 01 | BILL 9 | B09 | S2 | 01 | R00 | ACF07 | 018 |  |  |  |  |  |  |  |  |  |  |  |  |  |  |  |  |  |
| S06TS01802C0 |  | SW-06 ; Touch-up & Clean / JV inspection /CIR /De-snag | 18d | 2012-11-22 | 2012-12-15 | S06PA08709C0, S06PA09601C0, S06PA09701C0, S06PA09903C0, S06PA09907C0, S06PA11001C0, S06PA11009C0, S06TS01812C0, SAFT1005509C0, S06PA05501C0, S06PA09602C0, S06PA09503C0, S06F109670C1 |  |  |  |  | 25.7d | 0d | TESTING & COMMISSIONING [340 h]; Cost |  |  | S06TS01802C0 | SW | C | 06 | TS | SC | 018 | 02 | BILL 9 | B09 | S2 | 02 | R00 | ACF07 | 018 |  |  |  |  |  |  |  |  |  |  |  |  |  |  |  |  |  |
| S06TS01806C0 |  | SW-06 ; Consultant's final de-snag inspection | 7d | 2012-12-15 | 2012-12-23 | S06TS01802C0 |  |  |  |  | 25.7d | 0d | Labor General [0.5 h]; Cost |  |  | S06TS01803C0 | SW | C | 06 | TS | SC | 018 | 03 | BILL 9 | B09 | S2 | 03 | R00 | ACF07 | 018 |  |  |  |  |  |  |  |  |  |  |  |  |  |  |  |  |  |
|  | 03 | **Kitchen, Employee Servery & Dinning** |  | 2011-05-15 | 2013-01-19 |  |  |  |  |  |  |  |  |  |  |  |  |  |  |  |  |  |  |  |  |  |  |  |  |  |  |  |  |  |  |  |  |  |  |  |  |  |  |  |  |  |  |
| S06KI09201C0 |  | SW-06 ; Metal Studs (Employee Servery) | 75d | 2011-05-15 A | 2011-10-22 | S06AC09201C0 SS+6d, S06KI23001C0 | 75% | 18.75d | 2011-08-21 | 2011-11-22 | 35.25d | 0d | PARTITIONS [5456 h]; PARTITIONS - Metal Studs [522 m]; Cost |  |  | S06KI09201C0 | SW | C | 06 | KI | PT | 092 | 01 | BILL 9 | B09 | S2 | 1F | R00 | ACF06 | 092 | 0 | 0 | 0 | 0 | 313 | 944 | 5 | 167190.66 | 70 | 50 | 75 | GP | PMS |  |  |  |  |
| S06KI23001C0 |  | SW-06 ; 1st Fix, Inst. of Supports for MEP (Employee Servery) | 24d | 2011-05-15 A | 2011-05-29 A | S06S107807C0, S06S207807C0 | 100% |  | 2011-07-24 | 2011-08-21 |  |  | MECHANICAL [536.4 h]; Cost [30275.7 AED] | 30,275.67 | 30,275.67 | S06KI23001C0 | SW | C | 06 | KI | ME | 230 | 01 | BILL 9 | B09 | S2 | 1F | R00 | ACF04 | 230 |  |  |  |  |  |  | 100 |  |  |  |  | MEP | M1F | 1S |  |  |  |
| S06KI26001C0 |  | SW-06 ; 1st Fix, Inst of Trunking/Conduiting (Employee Servery) | 66d | 2011-05-18 A | 2011-11-10 | S06KI23001C0, S06S107807C0, S06S207807C0 | 50% | 33d | 2011-08-21 | 2011-11-12 | 69d | 0d | ELECTRICAL [447.6 h]; Cost [24105.1 AED] | 24,105.11 | 12,052.55 | S06KI26001C0 | SW | C | 06 | KI | ME | 260 | 01 | BILL 9 | B09 | S2 | 1F | R00 | ACF04 | 260 | 0 | 0 | 0 | 0 |  |  | 10 | 2798.04 | 30 | 25 |  | MEP | M1F | 1S | 35 |  |  |
| S06KI27010C0 |  | SW-06 ; 1st Fix, Inst of Trunking for ELV system (Employee Servery) | 38d | 2011-06-05 A | 2011-07-31 A | S06KI23001C0, S06KI26001C0 SS+12d, S06S107807C0, S06S207807C0 | 100% |  | 2011-06-05 | 2011-07-20 |  |  | ELECTRICAL [991.2 h]; Cost [51056.8 AED] | 51,056.81 | 51,056.81 | S06KI27010C0 | SW | C | 06 | KI | ME | 270 | 10 | BILL 9 | B09 | S2 | 1F | R00 | ACF04 | 270 |  |  |  |  |  |  |  | 6031.32 |  |  |  | MEP | M1F | 1S | 60 |  |  |
| S06KI09203C0 |  | SW-06 ; Partitions 1st face (Employee Servery) | 75d | 2011-06-07 A | 2011-11-30 | S06KI09201C0 | 60% | 30d | 2011-08-08 | 2011-11-09 | 68.25d | 18d | PARTITIONS [522 m]; PARTITIONS [4271 h]; Cost |  |  | S06KI09203C0 | SW | C | 06 | KI | PT | 092 | 03 | BILL 9 | B09 | S2 | 2F | R00 | ACF06 | 092 | 0 | 0 | 0 | 0 | 314 | 945 |  | 21278.81 | 50 | 10 | 60 | GP | P1F |  |  |  |  |
| S06KI22019C0 |  | SW-06 ; 1st Fix, Inst of Drainage pipe (ceiling) (Employee Servery) | 66d | 2011-06-07 A | 2011-11-19 | S06KI23001C0, S06KI26013C0 SS+12d | 40% | 39.6d | 2011-07-02 | 2011-09-19 | 69d | 0d | PLUMBING [310.8 h]; Cost [16770.4 AED] | 16,770.39 | 6,708.16 | S06KI22019C0 | SW | C | 06 | KI | ME | 220 | 19 | BILL 9 | B09 | S2 | 1F | R00 | ACF04 | 220 | 0 | 0 | 0 | 0 |  |  |  | 13612.36 | 30 | 20 | 40 | MEP | M1F | 1S | 85 |  |  |
| S06KI21111C0 |  | SW-06 ; 1st Fix, Inst of Sprinkler main pipe (Employee Servery) | 90d | 2011-06-08 A | 2011-10-31 | S06KI22005C0 SS+14d, S06KI23001C0 | 70% | 27d | 2011-07-30 | 2011-11-17 | 69d | 0d | MECHANICAL [793.2 h]; Cost [43268 AED] | 43,267.97 | 30,287.58 | S06KI21111C0 | SW | C | 06 | KI | ME | 211 | 11 | BILL 9 | B09 | S2 | 1F | R00 | ACF04 | 211 | 0 | 0 | 0 | 0 |  |  |  | 10041.79 | 65 | 40 | 70 | MEP | M1F | 1S | 75 |  |  |
| S06KI26013C0 |  | SW-06 ; 1st Fix, Inst of Cable Tray (Employee Servery) | 60d | 2011-06-16 A | 2011-11-03 | S06KI23001C0, S06KI27010C0 SS+10d, S06S107807C0, S06S207807C0 | 50% | 30d | 2011-06-16 | 2011-08-27 | 69d | 0d | ELECTRICAL [231.6 h]; Cost [13047.4 AED] | 13,047.37 | 6,523.68 | S06KI26013C0 | SW | C | 06 | KI | ME | 260 | 13 | BILL 9 | B09 | S2 | 1F | R00 | ACF04 | 260 | 0 | 0 | 0 | 0 |  |  |  | 1514.5 |  |  | 50 | MEP | M1F | 1S | 75 |  |  |
| S06KI21117C0 |  | SW-06 ; 1st Fix, Inst of Sprinkler branch pipe (Employee Servery) | 90d | 2011-07-10 A | 2011-12-07 | S06KI09201C0, S06KI21111C0 | 70% | 27d | 2011-08-29 | 2011-12-20 | 141d | 90.75d | MECHANICAL [682.8 h]; Cost [37306.8 AED] | 37,306.8 | 26,114.76 | S06KI21117C0 | SW | C | 06 | KI | ME | 211 | 17 | BILL 9 | B09 | S2 | 1F | R00 | ACF04 | 211 | 0 | 0 | 0 | 0 |  |  |  |  | 65 | 35 | 70 | MEP | M1F | 1S | 75 |  |  |
| S06KI22005C0 |  | SW-06 ; 1st Fix, Inst of Water supply pipe (ceiling) (Employee Servery) | 60d | 2011-07-10 A | 2011-11-03 | S06KI22019C0 SS+10d, S06KI23001C0 | 50% | 30d | 2011-06-30 | 2011-09-11 | 69d | 0d | PLUMBING [1688.4 h]; Cost [162261 AED] | 162,261.32 | 81,130.66 | S06KI22005C0 | SW | C | 06 | KI | ME | 220 | 05 | BILL 9 | B09 | S2 | 1F | R00 | ACF04 | 220 | 0 | 0 | 0 | 0 |  |  |  |  |  |  | 30 | MEP | M1F | 1S | 25 |  |  |
| S06KI23017C0 |  | SW-06 ; 1st Fix, Inst of CHW pipe (Employee Servery) | 72d | 2011-07-10 A | 2011-11-14 | S06KI21111C0 SS+10d, S06KI23001C0 | 50% | 36d | 2011-07-17 | 2011-10-11 | 69d | 0d | MECHANICAL [1687.2 h]; Cost [92145.2 AED] | 92,145.18 | 46,072.59 | S06KI23017C0 | SW | C | 06 | KI | ME | 230 | 17 | BILL 9 | B09 | S2 | 1F | R00 | ACF04 | 230 | 0 | 0 | 0 | 0 |  |  |  |  | 40 | 30 | 50 | MEP | M1F | 1S | 50 |  |  |
| S06KI23023C0 |  | SW-06 ; 1st Fix, Inst of Main Ducting (Employee Servery) | 66d | 2011-07-10 A | 2011-11-10 | S06KI23001C0, S06KI23017C0 SS+10d | 50% | 33d | 2011-07-28 | 2011-10-16 | 114d | 0d | MECHANICAL [6650.4 h]; Cost [363211 AED] | 363,210.66 | 181,605.33 | S06KI23023C0 | SW | C | 06 | KI | ME | 230 | 23 | BILL 9 | B09 | S2 | 1F | R00 | ACF04 | 230 | 0 | 0 | 0 | 0 |  |  |  |  | 30 | 25 | 40 | MEP | M1F | 1S | 50 |  |  |
| S06KI22007C0 |  | SW-06 ; 1st Fix, Inst of Medical Gas pipe (Employee Servery) | 48d | 2011-10-01 | 2011-11-29 | S06KI21111C0 SS+6d, S06KI23001C0 |  |  |  |  | 69d | 18.75d | PLUMBING [187.2 h]; Cost |  |  | S06KI22007C0 | SW | C | 06 | KI | ME | 220 | 07 | BILL 9 | B09 | S2 | 1F | R00 | ACF04 | 220 |  |  |  |  |  |  |  |  |  |  |  | MEP | M1F | 1S | 60 |  |  |
| S06KI22011C0 |  | SW-06 ; 2nd Fix, Drainage/Water pipe (wall) (Employee Servery) | 42d | 2011-10-22 | 2011-12-15 | S06KI09201C0 |  |  |  |  | 50.25d | 0d | PLUMBING [310.8 h]; Cost |  |  | S06KI22011C0 | SW | C | 06 | KI | ME | 220 | 11 | BILL 9 | B09 | S2 | 2F | R00 | ACF07 | 220 |  |  |  |  |  |  |  |  |  |  |  | MEP |  | 2n |  |  |  |
| S06KI22015C0 |  | SW-06 ; 2nd Fix, Medical Gas pipe (Employee Servery) | 42d | 2011-10-22 | 2011-12-15 | S06KI09201C0, S06KI22007C0 SS |  |  |  |  | 50.25d | 0d | PLUMBING [187.2 h]; Cost |  |  | S06KI22015C0 | SW | C | 06 | KI | ME | 220 | 15 | BILL 9 | B09 | S2 | 2F | R00 | ACF07 | 220 |  |  |  |  |  |  |  |  |  |  |  | MEP |  | 2n | 30 |  |  |
| S06KI26009C0 |  | SW-06 ; 2nd Fix, Inst of Wall conduites (Employee Servery) | 42d | 2011-10-22 | 2011-12-15 | S06KI09201C0 |  |  |  |  | 50.25d | 0d | ELECTRICAL [447.6 h]; Cost |  |  | S06KI26009C0 | SW | C | 06 | KI | ME | 260 | 09 | BILL 9 | B09 | S2 | 2F | R00 | ACF07 | 260 |  |  |  |  |  |  |  |  |  |  |  | MEP |  | 2n | 30 |  |  |
| S06KI40302C0 |  | SW-06 ; 2nd Fix, Pneumatic tube (Employee Servery) | 42d | 2011-10-22 | 2011-12-15 | S06KI09201C0 |  |  |  |  | 50.25d | 0d | MECHANICAL [1036.8 h]; Cost |  |  | S06KI40302C0 | SW | C | 06 | KI | ME | 403 | 02 | BILL 9 | B09 | S2 | 2F | R00 | ACF07 | 403 |  |  |  |  |  |  |  |  |  |  |  | MEP |  | 2n |  |  |  |
| S06KI23008C0 |  | SW-06 ; 1st Fix, Inst of VCD's/FD's (Employee Servery) | 48d | 2011-11-12 | 2012-01-09 | S06KI23023C0 |  |  |  |  | 114d | 63.75d | MECHANICAL [1111.2 h]; Cost |  |  | S06KI23008C0 | SW | C | 06 | KI | ME | 230 | 08 | BILL 9 | B09 | S2 | 1F | R00 | ACF04 | 230 |  |  |  |  |  |  |  |  |  |  |  | MEP | M1F | 1S | 30 |  |  |
| S06KI27001C0 |  | SW-06 ; 1st Fix, Wiring/ Cabling work (Employee Servery) | 48d | 2011-11-12 | 2012-01-09 | S06KI26001C0, S06KI26013C0, S06KI27010C0 |  |  |  |  | 114d | 63.75d | ELECTRICAL [241.2 h]; Cost |  |  | S06KI27001C0 | SW | C | 06 | KI | ME | 270 | 01 | BILL 9 | B09 | S2 | 1F | R00 | ACF04 | 270 |  |  |  |  |  |  |  |  |  |  |  | MEP | M1F | 1S | 10 |  |  |
| S06KI23009C0 |  | SW-06 ; 2nd Fix, Inst of VAV'S CHW connection (Employee Servery) | 42d | 2011-11-15 | 2012-01-05 | S06KI23017C0 |  |  |  |  | 69d | 0d | MECHANICAL [1282.8 h]; Cost |  |  | S06KI23009C0 | SW | C | 06 | KI | ME | 230 | 09 | BILL 9 | B09 | S2 | 2F | R00 | ACF07 | 230 |  |  |  |  |  |  |  |  |  |  |  | MEP |  | 2n |  |  |  |
| S06KI08103C0 |  | SW-06 ; Door Frames (Employee Servery) | 36d | 2011-11-19 | 2012-01-02 | S06KI09201C0, GNHE08101C0 FS+69d, S06AC08103C0 SS+3d |  |  |  |  | 35.5d | 0d | ASSORTED DOORS [216 h]; Cost |  |  | S06KI08103C0 | SW | C | 06 | KI | DO | 081 | 03 | BILL 9 | B09 | S2 | DF | R00 | ACF06 | 081 |  |  |  |  | 316 | 947 |  |  |  |  |  |  |  |  |  | 08 |  |
| S06KI01005C0 |  | SW-06 ; 2nd, Wall Inspection by Consultant (Employee Servery) | 6d | 2011-12-15 | 2011-12-22 | S06KI22011C0, S06KI22015C0, S06KI26009C0, S06KI40302C0 |  |  |  |  | 50.25d | 0d | Labor General [0.6 h]; Cost |  |  | S06KI01005C0 | SW | C | 06 | KI | ME | 010 | 05 | BILL 9 | B09 | S2 | WI | R00 | ACF07 | 010 |  |  |  |  |  |  |  |  |  |  |  | MEP |  | 2n |  |  |  |
| S06KI09205C0 |  | SW-06 ; Partitions Closing (Employee Servery) | 48d | 2011-12-22 | 2012-02-19 | S06KI01005C0, S06KI09203C0, S06KI22005C0, S06KI22019C0, SAFOA09212C1 FF, S06KI08103C0 FF, SAFCI22001R20 FS+58d |  |  |  |  | 50.25d | 0d | PARTITIONS [522 m]; PARTITIONS [5461 h]; Cost |  |  | S06KI09205C0 | SW | C | 06 | KI | PT | 092 | 05 | BILL 9 | B09 | S2 | FF | R00 | ACF06 | 092 |  |  |  |  | 315 | 946 |  |  |  |  |  | GP | P2F |  |  |  |  |
| S06KI23015C0 |  | SW-06 ; 2nd Fix, Insulation of CHW pipe & Duct (Employee Servery) | 48d | 2012-01-07 | 2012-03-03 | S06KI23009C0, S06KI23017C0, S06KI23023C0 |  |  |  |  | 69d | 18.75d | MECHANICAL [3980.4 h]; Cost |  |  | S06KI23015C0 | SW | C | 06 | KI | ME | 230 | 15 | BILL 9 | B09 | S2 | 2F | R00 | ACF07 | 230 |  |  |  |  |  |  |  |  |  |  |  | MEP |  | 2n |  |  |  |
| S06KI07103C0 |  | SW-06 ; Waterproofing (Employee Servery) | 12d | 2012-02-19 | 2012-03-04 | S06KI08103C0, S06KI09205C0 |  |  |  |  | 140.25d | 0d | THERMAL & MOISTURE [296 h]; THERMAL & MOISTURE [1933 m2]; Cost |  |  | S06KI07103C0 | SW | C | 06 | KI | FF | 071 | 03 | BILL 9 | B09 | S2 | 01 | R00 | ACF03 | 071 |  |  |  |  | 105 | 999 |  |  |  |  |  |  |  |  |  |  |  |
| S06KI09901C0 |  | SW-06 ; Wall Prime & 1st coat (Employee Servery) | 30d | 2012-02-19 | 2012-03-25 | S06KI09205C0 |  |  |  |  | 50.25d | 0d | WALL PAINT [1050 h]; WALL PAINT [1309 m2]; Cost |  |  | S06KI09901C0 | SW | C | 06 | KI | PA | 099 | 01 | BILL 9 | B09 | S2 | 01 | R00 | ACF06 | 099 |  |  |  |  | 328 | 956 |  |  |  |  |  |  |  |  |  |  |  |
| S06KI26005C0 |  | SW-06 ; 2nd Fix, Wiring for Power/Lighting/Emergency (Employee Servery) | 42d | 2012-02-19 | 2012-04-08 | S06KI09205C0 |  |  |  |  | 140.25d | 0d | ELECTRICAL [241.2 h]; Cost |  |  | S06KI26005C0 | SW | C | 06 | KI | ME | 260 | 05 | BILL 9 | B09 | S2 | 2F | R00 | ACF07 | 260 |  |  |  |  |  |  |  |  |  |  |  | MEP |  | 2n |  |  |  |
| S06KI26007C0 |  | SW-06 ; 2nd Fix, Cable Pulling (Employee Servery) | 42d | 2012-02-19 | 2012-04-08 | S06KI09201C0 SS+6d, S06KI09205C0 |  |  |  |  | 182.25d | 158.25d | ELECTRICAL [1532.4 h]; Cost |  |  | S06KI26007C0 | SW | C | 06 | KI | ME | 260 | 07 | BILL 9 | B09 | S2 | 2F | R00 | ACF07 | 260 |  |  |  |  |  |  |  |  |  |  |  | MEP |  | 2n |  |  |  |
| S06KI26011C0 |  | SW-06 ; 2nd Fix, Inst of Equipment (DB) (Employee Servery) | 48d | 2012-02-19 | 2012-04-15 | S06KI09205C0 |  |  |  |  | 122.25d | 72d | ELECTRICAL [646.8 h]; Cost |  |  | S06KI26011C0 | SW | C | 06 | KI | ME | 260 | 11 | BILL 9 | B09 | S2 | 2F | R00 | ACF04 | 260 |  |  |  |  |  |  |  |  |  |  |  | MEP |  | 2n |  |  | E |
| S06KI26053C0 |  | SW-06 ; 2nd Fix, Wiring / Cabling (Employee Servery) | 42d | 2012-02-19 | 2012-04-08 | S06KI09203C0, S06KI09205C0 |  |  |  |  | 74.25d | 24d | ELECTRICAL [241.2 h]; Cost |  |  | S06KI26053C0 | SW | C | 06 | KI | ME | 260 | 53 | BILL 9 | B09 | S2 | 2F | R00 | ACF07 | 260 |  |  |  |  | 389 | 977 |  |  |  |  |  | MEP |  | 2n |  |  |  |
| S06KI09305C0 |  | SW-06 ; CeramSW floor tile (Employee Servery) | 42d | 2012-03-04 | 2012-04-22 | S06KI07103C0 |  |  |  |  | 140.25d | 0d | CERAMIC FLOOR TILES [368 h]; CERAMIC FLOOR TILES [203 m2]; Cost |  |  | S06KI09305C0 | SW | C | 06 | KI | FF | 093 | 05 | BILL 9 | B09 | S2 | 02 | R00 | ACF06 | CT |  |  |  |  | 106 | 1000 |  |  |  |  |  |  |  |  |  |  |  |
| S06KI11004C0 |  | SW-06 ; Cold room / Kitchen Hood (Employee Servery) | 7d | 2012-03-04 | 2012-03-12 | S06KI07103C0 |  |  |  |  | 195.25d | 89d | Labor General [0.5 h]; Cost |  |  | DP2KS07103C0 | SW | C | 06 | KI | EQ | 110 | 04 | BILL 9 | B09 | S2 | 06 | R00 | ACF08 | KE |  |  |  |  | 105 | 999 |  |  |  |  |  |  |  |  |  |  |  |
| S06KI05501C0 |  | SW-06 ; Handrails & balustrade (Employee Servery) | 30.38d | 2012-03-25 | 2012-04-30 | S06KI09901C0 |  |  |  |  | 97.88d | 47.62d | SECONDARY STEEL [229 h]; Cost |  |  | S06KI05501C0 | SW | C | 06 | KI | SW | 055 | 01 | BILL 9 | B09 | S2 | 01 | R00 | ACF03 | a |  |  |  |  |  |  |  |  |  |  |  |  |  |  |  |  |  |
| S06KI09501C0 |  | SW-06 ; Ceiling Grid and Service Tile (Employee Servery) | 36d | 2012-03-25 | 2012-05-06 | S06KI09205C0 FS+15d, S06KI21117C0, S06KI23008C0, S06KI23009C0, S06KI23015C0, S06KI27001C0, S06KI26053C0 FF, S06KI09901C0 |  |  |  |  | 50.25d | 0d | CEILING GRID FOR GYPSUM [1022.7 h]; CEILING GRID FOR GYPSUM [87.43 m2]; Cost |  |  | S06KI09501C0 | SW | C | 06 | KI | CE | 095 | 01 | BILL 9 | B09 | S2 | 01 | R00 | ACF06 | 095 |  |  |  |  | 323 | 952 |  |  |  |  |  |  |  |  |  |  |  |
| S06KI40303C0 |  | SW-06 ; Final Fix, Pneumatic tube (Employee Servery) | 36d | 2012-03-25 | 2012-05-06 | S06KI09901C0 |  |  |  |  | 200.25d | 176.25d | MECHANICAL [1036.8 h]; Cost |  |  | S06KI40303C0 | SW | C | 06 | KI | ME | 403 | 03 | BILL 9 | B09 | S2 | FF | R00 | ACF07 | 403 |  |  |  |  |  |  |  |  |  |  |  | MEP |  | FF |  |  |  |
| S06KI26015C0 |  | SW-06 ; Final Fix, Termination & Gladding of Cables (Employee Servery) | 36d | 2012-04-08 | 2012-05-20 | S06KI26005C0 |  |  |  |  | 140.25d | 66d | ELECTRICAL [85.2 h]; Cost |  |  | S06KI26015C0 | SW | C | 06 | KI | ME | 260 | 15 | BILL 9 | B09 | S2 | FF | R00 | ACF07 | 260 |  |  |  |  |  |  |  |  |  |  |  | MEP |  | FF |  |  |  |
| S06KI22025C0 |  | SW-06 ; Final Fix, Inst of Sanitary Ware (Employee Servery) | 36d | 2012-04-22 | 2012-06-03 | S06KI09205C0, S06KI09305C0, A10230 FS+148d |  |  |  |  | 140.25d | 0d | PLUMBING [1246.8 h]; Cost |  |  | S06KI22025C0 | SW | C | 06 | KI | ME | 220 | 25 | BILL 9 | B09 | S2 | FF | R00 | ACF07 | 220 |  |  |  |  |  |  |  |  |  |  |  | MEP |  | FF |  |  |  |
| S06KI09601C0 |  | SW-06 ; Flooring (stone) (Employee Servery) | 42d | 2012-05-06 | 2012-06-25 | S06KI09901C0, S06KI09501C0, S06KI05501C0 FF |  |  |  |  | 50.25d | 0d | STONE FLOOR [4416 h]; STONE FLOOR [2452 m2]; Cost |  |  | S06KI09601C0 | SW | C | 06 | KI | FF | 096 | 01 | BILL 9 | B09 | S2 | 09 | R00 | ACF06 | ST |  |  |  |  | 326 | 955 |  |  |  |  |  |  |  |  |  |  |  |
| S06KI09905C0 |  | SW-06 ; Ceiling Prime & 1st coat (Employee Servery) | 30d | 2012-05-06 | 2012-06-10 | S06KI09501C0 |  |  |  |  | 152.25d | 0d | CEILING PAINT [65 h]; CEILING PAINT [80 m2]; Cost |  |  | S06KI09905C0 | SW | C | 06 | KI | PA | 099 | 05 | BILL 9 | B09 | S2 | 01 | R00 | ACF06 | 099 |  |  |  |  | 330 | 958 |  |  |  |  |  |  |  |  |  |  |  |
| S06KI21115C0 |  | SW-06 ; 2nd Fix, Inst of Sprinkler droppers (Employee Servery) | 42d | 2012-05-06 | 2012-06-25 | S06KI09501C0 |  |  |  |  | 74.25d | 0d | MECHANICAL [1309.2 h]; Cost |  |  | S06KI21115C0 | SW | C | 06 | KI | ME | 211 | 15 | BILL 9 | B09 | S2 | 2F | R00 | ACF07 | 211 |  |  |  |  |  |  |  |  |  |  |  | MEP |  | 2n |  |  |  |
| S06KI23021C0 |  | SW-06 ; 2nd Fix, Inst of Flexible Duct & Plenum boxes (Employee Servery) | 42d | 2012-05-06 | 2012-06-25 | S06KI09205C0, S06KI09501C0 |  |  |  |  | 74.25d | 0d | MECHANICAL [430.8 h]; Cost |  |  | S06KI23021C0 | SW | C | 06 | KI | ME | 230 | 21 | BILL 9 | B09 | S2 | 2F | R00 | ACF07 | 230 |  |  |  |  |  |  |  |  |  |  |  | MEP |  | 2n |  |  |  |
| S06KI26017C0 |  | SW-06 ; Final Fix, Inst of Ceiling rose (Employee Servery) | 36d | 2012-05-06 | 2012-06-18 | S06KI09501C0 |  |  |  |  | 74.25d | 0d | ELECTRICAL [36 h]; Cost |  |  | S06KI26017C0 | SW | C | 06 | KI | ME | 260 | 17 | BILL 9 | B09 | S2 | FF | R00 | ACF07 | 260 |  |  |  |  |  |  |  |  |  |  |  | MEP |  | FF |  |  |  |
| S06KI27002C0 |  | SW-06 ; 2nd Fix, Wiring Droppers (Employee Servery) | 42d | 2012-05-06 | 2012-06-25 | S06KI09501C0 |  |  |  |  | 74.25d | 0d | ELECTRICAL [241.2 h]; Cost |  |  | S06KI27002C0 | SW | C | 06 | KI | ME | 270 | 02 | BILL 9 | B09 | S2 | 2F | R00 | ACF07 | 270 |  |  |  |  |  |  |  |  |  |  |  | MEP |  | 2n |  |  |  |
| S06KI27020C0 |  | SW-06 ; 2nd Fix, Inst of ELV Equipment (Panels) (Employee Servery) | 54d | 2012-05-06 | 2012-07-09 | S06KI09205C0, S06KI09501C0 |  |  |  |  | 50.25d | 0d | ELECTRICAL [1868.4 h]; Cost |  |  | S06KI27020C0 | SW | C | 06 | KI | ME | 270 | 20 | BILL 9 | B09 | S2 | 2F | R00 | ACF04 | 270 |  |  |  |  |  |  |  |  |  |  |  | MEP |  | 2n |  |  | E |
| S06KI22021C0 |  | SW-06 ; Final Fix, Terminate Sanitary Ware & Appliances (Employee Servery) | 36d | 2012-06-03 | 2012-07-16 | S06KI22011C0, S06KI22025C0 |  |  |  |  | 140.25d | 116.25d | PLUMBING [1246.8 h]; Cost |  |  | S06KI22021C0 | SW | C | 06 | KI | ME | 220 | 21 | BILL 9 | B09 | S2 | FF | R00 | ACF07 | 220 |  |  |  |  |  |  |  |  |  |  |  | MEP |  | FF |  |  |  |
| S06KI09903C0 |  | SW-06 ; Wall Final Paint (Employee Servery) | 30d | 2012-06-10 | 2012-07-16 | S06KI09901C0, S06KI09905C0 |  |  |  |  | 152.25d | 78d | WALL PAINT [566 h]; WALL PAINT [705 m2]; Cost |  |  | S06KI09903C0 | SW | C | 06 | KI | PA | 099 | 03 | BILL 9 | B09 | S2 | 02 | R00 | ACF06 | 099 |  |  |  |  | 329 | 957 |  |  |  |  |  |  |  |  |  |  |  |
| S06KI26003C0 |  | SW-06 ; Final Fix, Inst of Light fittings (Employee Servery) | 42d | 2012-06-18 | 2012-08-06 | S06KI09501C0, S06KI26017C0 |  |  |  |  | 74.25d | 0d | ELECTRICAL [4813.2 h]; Cost |  |  | S06KI26003C0 | SW | C | 06 | KI | ME | 260 | 03 | BILL 9 | B09 | S2 | FF | R00 | ACF07 | 260 |  |  |  |  |  |  |  |  |  |  |  | MEP |  | FF |  |  |  |
| S06KI08107C0 |  | SW-06 ; Doors (Employee Servery) | 36d | 2012-06-25 | 2012-08-06 | S06KI08103C0, S06KI09901C0, S06KI09601C0 |  |  |  |  | 106d | 0d | ASSORTED DOORS [490 h]; ASSORTED DOORS [49 no]; Cost |  |  | S06KI08107C0 | SW | C | 06 | KI | DO | 081 | 07 | BILL 9 | B09 | S2 | DR | R00 | ACF06 | 081 |  |  |  |  | 317 | 948 |  |  |  |  |  |  |  |  |  | 08 |  |
| S06KI11071C0 |  | SW-06 ; Food Service Equipment (Employee Servery) | 52d | 2012-06-25 | 2012-08-27 | S06KI09601C0, S06KI11004C0, SV10AF11007R2 FF |  |  |  |  | 106.25d | 82.25d | FF&E [4683 h]; FF&E [1560.91 no]; Cost |  |  | S06KI11071C0 | SW | C | 06 | KI | EQ | 110 | 71 | BILL 9 | B09 | S2 | 06 | R00 | ACF08 | KE |  |  |  |  | 313 | 944 |  |  |  |  |  | FK |  |  |  |  |  |
| S06KI21113C0 |  | SW-06 ; Final Fix, Inst of Sprinklers head/ Extinguisher (Employee Servery) | 36d | 2012-06-25 | 2012-08-06 | S06KI09501C0, S06KI21115C0 |  |  |  |  | 74.25d | 0d | MECHANICAL [237.6 h]; Cost |  |  | S06KI21113C0 | SW | C | 06 | KI | ME | 211 | 13 | BILL 9 | B09 | S2 | FF | R00 | ACF07 | 211 |  |  |  |  |  |  |  |  |  |  |  | MEP |  | FF |  |  |  |
| S06KI23019C0 |  | SW-06 ; Final Fix, Inst of Grilles & Diffusers (Employee Servery) | 36d | 2012-06-25 | 2012-08-06 | S06KI09501C0, S06KI23021C0 |  |  |  |  | 74.25d | 0d | MECHANICAL [835.2 h]; Cost |  |  | S06KI23019C0 | SW | C | 06 | KI | ME | 230 | 19 | BILL 9 | B09 | S2 | FF | R00 | ACF07 | 230 |  |  |  |  |  |  |  |  |  |  |  | MEP |  | FF |  |  |  |
| S06KI27030C0 |  | SW-06 ; Final Fix, Inst of ELV device (Detector/Speaker) (Employee Servery) | 36d | 2012-06-25 | 2012-08-06 | S06KI09501C0, S06KI27002C0 |  |  |  |  | 74.25d | 0d | ELECTRICAL [1348.8 h]; Cost |  |  | S06KI27030C0 | SW | C | 06 | KI | ME | 270 | 30 | BILL 9 | B09 | S2 | FF | R00 | ACF07 | 270 |  |  |  |  |  |  |  |  |  |  |  | MEP |  | FF |  |  |  |
| S06KI09701C0 |  | SW-06 ; Wall finishes (ST, WD, WC) (Employee Servery) | 54d | 2012-07-09 | 2012-09-12 | S06KI26011C0, S06KI27020C0, S06KI09601C0 |  |  |  |  | 50.25d | 0d | ASSORTED WALL FINISH [1073 h]; ASSORTED WALL FINISH [1233 m2]; Cost |  |  | S06KI09701C0 | SW | C | 06 | KI | WF | 097 | 01 | BILL 9 | B09 | S2 | 01 | R00 | ACF06 | 097 |  |  |  |  | 105 | 1002 |  |  |  |  |  |  |  |  |  |  |  |
| S06KI06101C0 |  | SW-06 ; Wood / caseworks (Employee Servery) | 66d | 2012-07-26 | 2012-10-13 | S06CO04406C0, S06F106101C0 SS+15d, S06KI09901C0, SAFWA00105M0, S06KI09601C0 |  |  |  |  | 24d | 0d | WOOD WORK/CASEWORK [121.89 no]; WOOD WORK/CASEWORK [4545 h]; Cost |  |  | S06KI06101C0 | SW | C | 06 | KI | WO | 061 | 01 | BILL 9 | B09 | S2 | WW | R00 | ACF06 | 061 |  |  |  |  | 332 | 960 |  |  |  |  |  |  |  |  |  |  |  |
| S06KI01006C0 |  | SW-06 ; 2nd, Ceiling Inspection by Consultants (Employee Servery) | 6d | 2012-08-06 | 2012-08-13 | S06KI21115C0, S06KI23009C0, S06KI23015C0, S06KI27002C0, S06KI09501C0, S06KI21113C0, S06KI23019C0, S06KI26003C0, S06KI26017C0, S06KI27030C0, S06KI26015C0 |  |  |  |  | 74.25d | 50.25d | Labor General [0.6 h]; Cost |  |  | S06KI01006C0 | SW | C | 06 | KI | ME | 010 | 06 | BILL 9 | B09 | S2 | CI | R00 | ACF07 | 010 |  |  |  |  |  |  |  |  |  |  |  | MEP |  | 2n |  |  |  |
| S06KI08709C0 |  | SW-06 ; Ironmongery (Employee Servery) | 28.25d | 2012-08-06 | 2012-09-10 | S06KI08107C0 |  |  |  |  | 106d | 82d | IRONMONGERY [500 h]; IRONMONGERY [50 no]; Cost |  |  | S06KI08709C0 | SW | C | 06 | KI | DO | 087 | 09 | BILL 9 | B09 | S2 | IM | R00 | ACF06 | 087 |  |  |  |  | 322 | 951 |  |  |  |  |  |  |  |  |  | 08 |  |
| S06KI11001C0 |  | SW-06 ; Wall Protection (WP, CG, WG, FCG) (Employee Servery) | 24d | 2012-09-12 | 2012-10-10 | S06KI09701C0, S06KI09903C0 SS |  |  |  |  | 80.25d | 56.25d | Labor General [2 h]; Cost |  |  | S06KI11001C0 | SW | C | 06 | KI | WF | 110 | 01 | BILL 9 | B09 | S2 | 03 | R00 | ACF08 | b |  |  |  |  | 326 | 1001 |  |  |  |  |  |  |  |  |  |  |  |
| S06KI09503C0 |  | SW-06 ; Ceiling closure - ACT/Gypsum (Employee Servery) | 24d | 2012-10-14 | 2012-11-12 | S06KI01006C0, S06KI21115C0, S06KI26005C0, S06KI27001C0, S06KI27002C0, SAFOA09511C1 FF, S06KI06101C0, S06KI09701C0, S06KI23021C0, S06KI26007C0 |  |  |  |  | 24d | 0d | ASSORTED CEILING FINISH [963.71 h]; CEILING GYPSUM [28.7 h]; ASSORTED CEILING FINISH [1567 m2]; CEILING GYPSUM [87 m2]; Cost |  |  | S06KI09503C0 | SW | C | 06 | KI | CE | 095 | 03 | BILL 9 | B09 | S2 | 02 | R00 | ACF06 | 095 |  |  |  |  | 324 | 953 |  |  |  |  |  |  |  |  |  |  |  |
| S06KI11003C0 |  | SW-06 ; FF & E (Employee Servery) | 24d | 2012-10-14 | 2012-11-12 | S06KI09601C0, S06KI06101C0 |  |  |  |  | 54d | 30d | FF&E [200 h]; FF&E [106.52 no]; Cost |  |  | S06KI11003C0 | SW | C | 06 | KI | WO | 110 | 03 | BILL 9 | B09 | S2 | FF&E | R00 | ACF08 | a |  |  |  |  | 333 | 961 |  |  |  |  |  |  |  |  |  |  |  |
| S06KI22029C0 |  | SW-06 ; Final Fix, Medical Gas pipe (Employee Servery) | 18d | 2012-10-14 | 2012-11-05 | S06KI09501C0, S06KI06101C0 |  |  |  |  | 48d | 24d | PLUMBING [187.2 h]; Cost |  |  | S06KI22029C0 | SW | C | 06 | KI | ME | 220 | 29 | BILL 9 | B09 | S2 | FF | R00 | ACF07 | 220 |  |  |  |  |  |  |  |  |  |  |  | MEP |  | FF |  |  |  |
| S06KI09907C0 |  | SW-06 ; Ceiling Final paint (Employee Servery) | 18d | 2012-11-13 | 2012-12-05 | S06KI09601C0, S06KI09905C0, S06KI09503C0 |  |  |  |  | 36d | 12d | CEILING PAINT [36 h]; CEILING PAINT [43 m2]; Cost |  |  | S06KI09907C0 | SW | C | 06 | KI | PA | 099 | 07 | BILL 9 | B09 | S2 | 02 | R00 | ACF06 | 099 |  |  |  |  | 331 | 959 |  |  |  |  |  |  |  |  |  |  |  |
| S06KI22027C0 |  | SW-06 ; Final Fix, Inst of All drain (Employee Servery) | 18d | 2012-11-13 | 2012-12-05 | S06KI09305C0, S06KI09503C0 |  |  |  |  | 24d | 0d | PLUMBING [310.8 h]; Cost |  |  | S06KI22027C0 | SW | C | 06 | KI | ME | 220 | 27 | BILL 9 | B09 | S2 | FF | R00 | ACF07 | 220 |  |  |  |  |  |  |  |  |  |  |  | MEP |  | FF |  |  |  |
| S06KI26019C0 |  | SW-06 ; Final Fix, Inst of Switch/Sockets (Employee Servery) | 18d | 2012-11-13 | 2012-12-05 | S06KI09901C0, S06KI09503C0 |  |  |  |  | 24d | 0d | ELECTRICAL [256.8 h]; Cost |  |  | S06KI26019C0 | SW | C | 06 | KI | ME | 260 | 19 | BILL 9 | B09 | S2 | FF | R00 | ACF07 | 260 |  |  |  |  |  |  |  |  |  |  |  | MEP |  | FF |  |  |  |

| ID | WBS | Activity | Duration | Start | Finish | Predecessors | Complete | Remaining | Planned start | Planned finish | Total float | Free float | Resources | Cost | Actual cost | change id | CCAD BUILDING(SET) | CCAD PHASE(SET) | CCAD FLOOR(SET) | CCAD ZONE(SET) | CCAD WORK(SET) | CCAD SECTION(SET) | CCAD SERIAL No.(SET) | CCAD CBS(SET) | CCAD BILL(SET) | CCAD HANDOVER(SET) | CCAD TAG(SET) | CCAD REV(SET) | CCADACF (SET) | CCAD SSCF | user_number8 | user_integer1 | user_integer2 | user_number7 | Change Order # | NEW ACTIVITY ID | RENZ % COMPLETE | Claimed This Month | P_811 | P_711 | U% | CCAD CSA | Act Selector % | R3 Partitions | July2011 Target% Complete | CCAD SUB ZONE MEP(SET) | CCAD DIVISION(SET) | CCAD MEQ | R3 Finish |
| --- | --- | --- | --- | --- | --- | --- | --- | --- | --- | --- | --- | --- | --- | --- | --- | --- | --- | --- | --- | --- | --- | --- | --- | --- | --- | --- | --- | --- | --- | --- | --- | --- | --- | --- | --- | --- | --- | --- | --- | --- | --- | --- | --- | --- | --- | --- | --- | --- | --- |
|  | 10 | **Precommissioning Tesing & snagging (Kitchen, Employee Servery & Dinning)** |  | 2012-12-06 | 2013-01-19 |  |  |  |  |  |  |  |  |  |  |  |  |  |  |  |  |  |  |  |  |  |  |  |  |  |  |  |  |  |  |  |  |  |  |  |  |  |  |  |  |  |  |  |  |
| S06TS01811C0 |  | SW-06 ; MEP de-snag, FIREM sign-off | 12d | 2012-12-06 | 2012-12-19 | S06KI26015C0, S06KI22025C0, S06KI22027C0, S06KI21113C0, S06KI23019C0, S06KI22029C0, S06KI26017C0, S06KI26003C0, S06KI27030C0, S06KI22021C0, S06KI40303C0, S06KI26019C0, S06KI11071C0 |  |  |  |  | 24d | 0d | TESTING & COMMISSIONING [510 h]; Cost |  |  | S06TS01801C0 | SW | C | 06 | TS | SC | 018 | 01 | BILL 9 | B09 | S2 | 01 | R00 | ACF07 | 018 |  |  |  |  |  |  |  |  |  |  |  |  |  |  |  |  |  |  |  |
| S06TS01802C10 |  | SW-06 ; Touch-up & Clean / JV inspection /CIR /De-snag | 18d | 2012-12-20 | 2013-01-10 | S06KI06101C0, S06KI08709C0, S06KI09305C0, S06KI09601C0, S06KI09701C0, S06KI09903C0, S06KI09907C0, S06KI11001C0, S06KI11003C0, S06KI11004C0, S06TS01811C0, S06KI05501C0, S06KI09503C0 |  |  |  |  | 24d | 0d | TESTING & COMMISSIONING [128 h]; Cost |  |  | S06TS01802C0 | SW | C | 06 | TS | SC | 018 | 02 | BILL 9 | B09 | S2 | 02 | R00 | ACF07 | 018 |  |  |  |  |  |  |  |  |  |  |  |  |  |  |  |  |  |  |  |
| S06TS01807C0 |  | SW-06 ; Consultant's final de-snag inspection | 7d | 2013-01-12 | 2013-01-19 | S06TS01802C10, S06TS01808C0 |  |  |  |  | 24d | 8d | Labor General [1 h]; Cost |  |  | S06TS01803C0 | SW | C | 06 | TS | SC | 018 | 03 | BILL 9 | B09 | S2 | 03 | R00 | ACF07 | 018 |  |  |  |  |  |  |  |  |  |  |  |  |  |  |  |  |  |  |  |
|  | 04 | **Faculty Office** |  | 2011-05-15 | 2013-01-09 |  |  |  |  |  |  |  |  |  |  |  |  |  |  |  |  |  |  |  |  |  |  |  |  |  |  |  |  |  |  |  |  |  |  |  |  |  |  |  |  |  |  |  |  |
| S06F109201C0 |  | SW-06 ; Metal Studs (Faculty Office) | 75d | 2011-05-15 A | 2011-10-30 | S06F123001C0 SS, S06KI09201C0 SS+6d, S06CO04406C0 FF, S06CO04405C0 FF | 75% | 18.75d | 2011-08-28 | 2011-11-30 | 28.08d | 0d | PARTITIONS [4446 h]; PARTITIONS - Metal Studs [425 m]; Cost |  |  | S06F109201C0 | SW | C | 06 | F1 | PT | 092 | 01 | BILL 9 | B09 | S2 | 1F | R00 | ACF06 | 092 | 0 | 0 | 0 | 0 | 313 | 944 | 5 | 61852.1 | 70 | 60 | 75 | GP | PMS | R3 |  |  |  |  |  |
| S06F121111C0 |  | SW-06 ; 1st Fix, Inst of Sprinkler main pipe (Faculty Office) | 90d | 2011-07-10 A | 2011-11-16 | S06F122005C0 SS+14d, S06F123001C0 | 65% | 31.5d | 2011-10-11 | 2012-01-31 | 44.1d | 0d | MECHANICAL [793.2 h]; Cost [43268 AED] | 43,267.97 | 28,124.18 | S06F121111C0 | SW | C | 06 | F1 | ME | 211 | 11 | BILL 9 | B09 | S2 | 1F | R00 | ACF04 | 211 | 0 | 0 | 0 | 0 |  |  |  |  | 65 | 35 | 65 | MEP | M1F |  | 75 | 1S |  |  |  |
| S06F121117C0 |  | SW-06 ; 1st Fix, Inst of Sprinkler branch pipe (Faculty Office) | 90d | 2011-07-10 A | 2011-12-26 | S06F109201C0, S06F121111C0 | 65% | 31.5d | 2011-11-30 | 2012-03-18 | 110.7d | 82.62d | MECHANICAL [682.8 h]; Cost [37306.8 AED] | 37,306.8 | 24,249.42 | S06F121117C0 | SW | C | 06 | F1 | ME | 211 | 17 | BILL 9 | B09 | S2 | 1F | R00 | ACF04 | 211 | 0 | 0 | 0 | 0 |  |  |  |  | 65 | 35 | 65 | MEP | M1F |  |  | 1S |  |  |  |
| S06F122005C0 |  | SW-06 ; 1st Fix, Inst of Water supply pipe (ceiling) (Faculty Office) | 60d | 2011-07-10 A | 2011-11-30 | S06F122019C0 SS+10d, S06F123001C0 | 30% | 42d | 2011-09-25 | 2011-12-10 | 44.1d | 0d | PLUMBING [1688.4 h]; Cost [162261 AED] | 162,261.32 | 48,678.4 | S06F122005C0 | SW | C | 06 | F1 | ME | 220 | 05 | BILL 9 | B09 | S2 | 1F | R00 | ACF04 | 220 | 0 | 0 | 0 | 0 |  |  |  |  |  |  | 30 | MEP | M1F |  | 45 | 1S |  |  |  |
| S06F122019C0 |  | SW-06 ; 1st Fix, Inst of Drainage pipe (ceiling) (Faculty Office) | 120d | 2011-07-10 A | 2011-11-05 | S06F123001C0, S06F126013C0 SS+14d | 80% | 24d | 2011-09-13 | 2012-02-08 | 44.1d | 0d | PLUMBING [310.8 h]; Cost [16770.4 AED] | 16,770.39 | 13,416.31 | S06F122019C0 | SW | C | 06 | F1 | ME | 220 | 19 | BILL 9 | B09 | S2 | 1F | R00 | ACF04 | 220 | 0 | 0 | 0 | 0 |  |  |  |  | 80 | 15 | 80 | MEP | M1F |  | 75 | 1S |  |  |  |
| S06F123017C0 |  | SW-06 ; 1st Fix, Inst of CHW pipe (Faculty Office) | 72d | 2011-07-10 A | 2011-11-27 | S06F121111C0 SS+14d, S06F123001C0 | 45% | 39.6d | 2011-10-27 | 2012-01-26 | 44.1d | 0d | MECHANICAL [1687.2 h]; Cost [92145.2 AED] | 92,145.18 | 41,465.33 | S06F123017C0 | SW | C | 06 | F1 | ME | 230 | 17 | BILL 9 | B09 | S2 | 1F | R00 | ACF04 | 230 | 0 | 0 | 0 | 0 |  |  |  |  | 40 | 30 | 45 | MEP | M1F |  | 25 | 1S |  |  |  |
| S06F123023C0 |  | SW-06 ; 1st Fix, Inst of Main Ducting (Faculty Office) | 90d | 2011-07-10 A | 2011-11-16 | S06F123001C0, S06F123017C0 SS+10d | 65% | 31.5d | 2011-11-12 | 2012-02-29 | 94.2d | 0d | MECHANICAL [6650.4 h]; Cost [363211 AED] | 363,210.66 | 236,086.93 | S06F123023C0 | SW | C | 06 | F1 | ME | 230 | 23 | BILL 9 | B09 | S2 | 1F | R00 | ACF04 | 230 | 0 | 0 | 0 | 0 |  |  |  |  | 60 | 25 | 65 | MEP | M1F |  |  | 1S |  |  |  |
| S06F126001C0 |  | SW-06 ; 1st Fix, Inst of Trunking/Conduiting (Faculty Office) | 66d | 2011-07-10 A | 2011-11-19 | S06F123001C0, S06S307807C0 | 50% | 33d | 2011-07-28 | 2011-10-16 | 44.1d | 0d | ELECTRICAL [447.6 h]; Cost [24105.1 AED] | 24,105.11 | 12,052.55 | S06F126001C0 | SW | C | 06 | F1 | ME | 260 | 01 | BILL 9 | B09 | S2 | 1F | R00 | ACF04 | 260 | 0 | 0 | 0 | 0 |  |  |  |  | 30 | 15 | 50 | MEP | M1F |  | 40 | 1S |  |  |  |
| S06F126013C0 |  | SW-06 ; 1st Fix, Inst of Cable Tray (Faculty Office) | 60d | 2011-07-10 A | 2011-11-15 | S06F123001C0, S06F127010C0 SS+10d, S06S307807C0 | 50% | 30d | 2011-08-25 | 2011-11-09 | 44.1d | 0d | ELECTRICAL [231.6 h]; Cost [13047.4 AED] | 13,047.37 | 6,523.68 | S06F126013C0 | SW | C | 06 | F1 | ME | 260 | 13 | BILL 9 | B09 | S2 | 1F | R00 | ACF04 | 260 | 0 |  |  | 0 |  |  |  |  |  |  | 50 | MEP | M1F |  | 60 | 1S |  |  |  |
| S06F127010C0 |  | SW-06 ; 1st Fix, Inst of Trunking for ELV system (Faculty Office) | 72d | 2011-07-10 A | 2011-11-22 | S06F123001C0, S06F126001C0 SS+14d, S06S307807C0 | 50% | 36d | 2011-08-14 | 2011-11-12 | 44.1d | 0d | ELECTRICAL [991.2 h]; Cost [51056.8 AED] | 51,056.81 | 25,528.4 | S06F127010C0 | SW | C | 06 | F1 | ME | 270 | 10 | BILL 9 | B09 | S2 | 1F | R00 | ACF04 | 270 | 0 | 0 | 0 | 0 |  |  |  |  | 35 | 25 | 50 | MEP | M1F |  |  | 1S |  |  |  |
| S06F109203C0 |  | SW-06 ; Partitions 1st face (Faculty Office) | 75d | 2011-07-13 A | 2011-12-10 | S06F109201C0 | 60% | 30d | 2011-08-28 | 2011-11-29 | 46.08d | 18d | PARTITIONS [425 m]; PARTITIONS [3481 h]; Cost |  |  | S06F109203C0 | SW | C | 06 | F1 | PT | 092 | 03 | BILL 9 | B09 | S2 | 2F | R00 | ACF06 | 092 | 0 | 0 | 0 | 0 | 314 | 945 |  |  | 50 | 20 | 60 | GP | P1F |  |  |  |  |  |  |
| S06F123001C0 |  | SW-06 ; 1st Fix, Inst. of Supports for MEP (Faculty Office) | 42d | 2011-09-05 A | 2011-10-08 | S06S307807C0 | 85% | 6.3d | 2011-09-01 | 2011-10-19 | 35.25d | 0d | MECHANICAL [536.4 h]; Cost [30275.7 AED] | 30,275.67 | 25,734.32 | S06F123001C0 | SW | C | 06 | F1 | ME | 230 | 01 | BILL 9 | B09 | S2 | 1F | R00 | ACF04 | 230 |  |  |  |  |  |  |  |  |  |  | 85 | MEP | M1F |  | 65 | 1S |  |  |  |
| S06F122007C0 |  | SW-06 ; 1st Fix, Inst of Medical Gas pipe (Faculty Office) | 48d | 2011-10-08 | 2011-12-08 | S06F121111C0 SS+14d, S06F123001C0 |  |  |  |  | 47.7d | 19.62d | PLUMBING [187.2 h]; Cost |  |  | S06F122007C0 | SW | C | 06 | F1 | ME | 220 | 07 | BILL 9 | B09 | S2 | 1F | R00 | ACF04 | 220 |  |  |  |  |  |  |  |  |  |  |  | MEP | M1F |  | 25 | 1S |  |  |  |
| S06F122011C0 |  | SW-06 ; 2nd Fix, Drainage/Water pipe (wall) (Faculty Office) | 42d | 2011-10-30 | 2011-12-24 | S06F109201C0 |  |  |  |  | 28.08d | 0d | PLUMBING [310.8 h]; Cost |  |  | S06F122011C0 | SW | C | 06 | F1 | ME | 220 | 11 | BILL 9 | B09 | S2 | 2F | R00 | ACF07 | 220 |  |  |  |  |  |  |  |  |  |  |  | MEP |  |  | 25 | 2n |  |  |  |
| S06F122015C0 |  | SW-06 ; 2nd Fix, Medical Gas pipe (Faculty Office) | 42d | 2011-10-30 | 2011-12-24 | S06F109201C0, S06F122007C0 SS |  |  |  |  | 28.08d | 0d | PLUMBING [187.2 h]; Cost |  |  | S06F122015C0 | SW | C | 06 | F1 | ME | 220 | 15 | BILL 9 | B09 | S2 | 2F | R00 | ACF07 | 220 |  |  |  |  |  |  |  |  |  |  |  | MEP |  |  |  | 2n |  |  |  |
| S06F126009C0 |  | SW-06 ; 2nd Fix, Inst of Wall conduites (Faculty Office) | 42d | 2011-10-30 | 2011-12-24 | S06F109201C0 |  |  |  |  | 28.08d | 0d | ELECTRICAL [447.6 h]; Cost |  |  | S06F126009C0 | SW | C | 06 | F1 | ME | 260 | 09 | BILL 9 | B09 | S2 | 2F | R00 | ACF07 | 260 |  |  |  |  |  |  |  |  |  |  |  | MEP |  |  | 15 | 2n |  |  |  |
| S06F140302C0 |  | SW-06 ; 2nd Fix, Pneumatic tube (Faculty Office) | 42d | 2011-10-30 | 2011-12-24 | S06F109201C0 |  |  |  |  | 28.08d | 0d | MECHANICAL [1142.4 h]; Cost |  |  | S06F140302C0 | SW | C | 06 | F1 | ME | 403 | 02 | BILL 9 | B09 | S2 | 2F | R00 | ACF07 | 403 |  |  |  |  |  |  |  |  |  |  |  | MEP |  |  |  | 2n |  |  |  |
| S06F123008C0 |  | SW-06 ; 1st Fix, Inst of VCD's/FD's (Faculty Office) | 48d | 2011-11-16 | 2012-01-15 | S06F123023C0 |  |  |  |  | 94.2d | 66.12d | MECHANICAL [1111.2 h]; Cost |  |  | S06F123008C0 | SW | C | 06 | F1 | ME | 230 | 08 | BILL 9 | B09 | S2 | 1F | R00 | ACF04 | 230 |  |  |  |  |  |  |  |  |  |  |  | MEP | M1F |  |  | 1S |  |  |  |
| S06F108103C0 |  | SW-06 ; Door Frames (Faculty Office) | 36d | 2011-11-22 | 2012-01-05 | S06F109201C0, GNHE08101C0 FS+69d, S06KI08103C0 SS+3d |  |  |  |  | 35.5d | 0d | ASSORTED DOORS [175 h]; Cost |  |  | S06F108103C0 | SW | C | 06 | F1 | DO | 081 | 03 | BILL 9 | B09 | S2 | DF | R00 | ACF06 | 081 |  |  |  |  | 316 | 947 |  |  |  |  |  |  |  |  |  |  | 08 |  |  |
| S06F127001C0 |  | SW-06 ; 1st Fix, Wiring/ Cabling work (Faculty Office) | 48d | 2011-11-22 | 2012-01-21 | S06F126001C0, S06F126013C0, S06F127010C0 |  |  |  |  | 89.7d | 61.62d | ELECTRICAL [241.2 h]; Cost |  |  | S06F127001C0 | SW | C | 06 | F1 | ME | 270 | 01 | BILL 9 | B09 | S2 | 1F | R00 | ACF04 | 270 |  |  |  |  |  |  |  |  |  |  |  | MEP | M1F |  |  | 1S |  |  |  |
| S06F123009C0 |  | SW-06 ; 2nd Fix, Inst of VAV'S CHW connection (Faculty Office) | 42d | 2011-11-27 | 2012-01-17 | S06F123017C0 |  |  |  |  | 44.1d | 0d | MECHANICAL [1282.8 h]; Cost |  |  | S06F123009C0 | SW | C | 06 | F1 | ME | 230 | 09 | BILL 9 | B09 | S2 | 2F | R00 | ACF07 | 230 |  |  |  |  |  |  |  |  |  |  |  | MEP |  |  |  | 2n |  |  |  |
| S06F101005C0 |  | SW-06 ; 2nd, Wall Inspection by Consultant (Faculty Office) | 6d | 2011-12-24 | 2011-12-31 | S06F122011C0, S06F122015C0, S06F126009C0, S06F140302C0 |  |  |  |  | 28.08d | 0d | Labor General [0.6 h]; Cost |  |  | S06F101005C0 | SW | C | 06 | F1 | ME | 010 | 05 | BILL 9 | B09 | S2 | WI | R00 | ACF07 | 010 |  |  |  |  |  |  |  |  |  |  |  | MEP |  |  |  | 2n |  |  |  |
| S06F109205C0 |  | SW-06 ; Partitions Closing (Faculty Office) | 48d | 2011-12-31 | 2012-02-27 | S06F101005C0, S06F109203C0, S06F122005C0, S06F122019C0, SAFOA09212C1 FF, S06F108103C0 FF, SAFCI22001R20 FS+58d |  |  |  |  | 28.08d | 0d | PARTITIONS [425 m]; PARTITIONS [4467 h]; Cost |  |  | S06F109205C0 | SW | C | 06 | F1 | PT | 092 | 05 | BILL 9 | B09 | S2 | FF | R00 | ACF06 | 092 |  |  |  |  | 315 | 946 |  |  |  |  |  | GP | P2F | R3 |  |  |  |  |  |
| S06F123015C0 |  | SW-06 ; 2nd Fix, Insulation of CHW pipe & Duct (Faculty Office) | 48d | 2012-01-17 | 2012-03-14 | S06F123009C0, S06F123017C0, S06F123023C0 |  |  |  |  | 44.1d | 16.02d | MECHANICAL [3980.4 h]; Cost |  |  | S06F123015C0 | SW | C | 06 | F1 | ME | 230 | 15 | BILL 9 | B09 | S2 | 2F | R00 | ACF07 | 230 |  |  |  |  |  |  |  |  |  |  |  | MEP |  |  |  | 2n |  |  |  |
| S06F107103C0 |  | SW-06 ; Waterproofing (Faculty Office) | 12d | 2012-02-27 | 2012-03-12 | S06F108103C0, S06F109205C0 |  |  |  |  | 90.33d | 0d | THERMAL & MOISTURE [240 h]; THERMAL & MOISTURE [1569 m2]; Cost |  |  | S06F107103C0 | SW | C | 06 | F1 | FF | 071 | 03 | BILL 9 | B09 | S2 | 01 | R00 | ACF03 | 071 |  |  |  |  | 105 | 999 |  |  |  |  |  |  |  |  |  |  |  |  |  |
| S06F109901C0 |  | SW-06 ; Wall Prime & 1st coat (Faculty Office) | 30d | 2012-02-27 | 2012-04-02 | S06F109205C0 |  |  |  |  | 28.08d | 0d | WALL PAINT [851 h]; WALL PAINT [1061 m2]; Cost |  |  | S06F109901C0 | SW | C | 06 | F1 | PA | 099 | 01 | BILL 9 | B09 | S2 | 01 | R00 | ACF06 | 099 |  |  |  |  | 328 | 956 |  |  |  |  |  |  |  |  |  |  |  |  |  |
| S06F126005C0 |  | SW-06 ; 2nd Fix, Wiring for Power/Lighting/Emergency (Faculty Office) | 42d | 2012-02-27 | 2012-04-16 | S06F109205C0 |  |  |  |  | 132.45d | 0d | ELECTRICAL [241.2 h]; Cost |  |  | S06F126005C0 | SW | C | 06 | F1 | ME | 260 | 05 | BILL 9 | B09 | S2 | 2F | R00 | ACF07 | 260 |  |  |  |  |  |  |  |  |  |  |  | MEP |  |  |  | 2n |  |  |  |
| S06F126007C0 |  | SW-06 ; 2nd Fix, Cable Pulling (Faculty Office) | 42d | 2012-02-27 | 2012-04-16 | S06F109201C0 SS+6d, S06F109205C0 |  |  |  |  | 174.33d | 136.08d | ELECTRICAL [1532.4 h]; Cost |  |  | S06F126007C0 | SW | C | 06 | F1 | ME | 260 | 07 | BILL 9 | B09 | S2 | 2F | R00 | ACF07 | 260 |  |  |  |  |  |  |  |  |  |  |  | MEP |  |  |  | 2n |  |  |  |
| S06F126011C0 |  | SW-06 ; 2nd Fix, Inst of Equipment (DB) (Faculty Office) | 48d | 2012-02-27 | 2012-04-23 | S06F109205C0 |  |  |  |  | 114.33d | 72d | ELECTRICAL [646.8 h]; Cost |  |  | S06F126011C0 | SW | C | 06 | F1 | ME | 260 | 11 | BILL 9 | B09 | S2 | 2F | R00 | ACF04 | 260 |  |  |  |  |  |  |  |  |  |  |  | MEP |  |  |  | 2n |  | E |  |
| S06F126053C0 |  | SW-06 ; 2nd Fix, Wiring / Cabling (Faculty Office) | 42d | 2012-02-27 | 2012-04-16 | S06F109203C0, S06F109205C0 |  |  |  |  | 52.08d | 24d | ELECTRICAL [241.2 h]; Cost |  |  | S06F126053C0 | SW | C | 06 | F1 | ME | 260 | 53 | BILL 9 | B09 | S2 | 2F | R00 | ACF07 | 260 |  |  |  |  | 389 | 977 |  |  |  |  |  | MEP |  |  |  | 2n |  |  |  |
| S06F109305C0 |  | SW-06 ; CeramSW floor tile (Faculty Office) | 42d | 2012-03-12 | 2012-04-30 | S06F107103C0 |  |  |  |  | 90.33d | 0d | CERAMIC FLOOR TILES [304 h]; CERAMIC FLOOR TILES [166 m2]; Cost |  |  | S06F109305C0 | SW | C | 06 | F1 | FF | 093 | 05 | BILL 9 | B09 | S2 | 02 | R00 | ACF06 | CT |  |  |  |  | 106 | 1000 |  |  |  |  |  |  |  |  |  |  |  |  |  |
| S06F105501C0 |  | SW-06 ; Handrails & balustrade (Faculty Office) | 35.88d | 2012-04-02 | 2012-05-14 | S06F109901C0 |  |  |  |  | 70.2d | 42.12d | SECONDARY STEEL [186 h]; Cost |  |  | S06F105501C0 | SW | C | 06 | F1 | SW | 055 | 01 | BILL 9 | B09 | S2 | 01 | R00 | ACF03 | a |  |  |  |  |  |  |  |  |  |  |  |  |  |  |  |  |  |  |  |
| S06F109501C0 |  | SW-06 ; Ceiling Grid and Service Tile (Faculty Office) | 36d | 2012-04-02 | 2012-05-14 | S06F109205C0 SS+15d, S06F121117C0, S06F123008C0, S06F123009C0, S06F123015C0, S06F127001C0, SAFCI22002R02 FS+58d, S06F126053C0 FF, S06F109901C0 |  |  |  |  | 28.08d | 0d | CEILING GRID FOR GYPSUM [827.9 h]; CEILING GRID FOR GYPSUM [70.96 m2]; Cost |  |  | S06F109501C0 | SW | C | 06 | F1 | CE | 095 | 01 | BILL 9 | B09 | S2 | 01 | R00 | ACF06 | 095 |  |  |  |  | 323 | 952 |  |  |  |  |  |  |  |  |  |  |  |  | R3 |
| S06F126015C0 |  | SW-06 ; Final Fix, Termination & Gladding of Cables (Faculty Office) | 36d | 2012-04-16 | 2012-05-28 | S06F126005C0 |  |  |  |  | 132.45d | 66d | ELECTRICAL [85.2 h]; Cost |  |  | S06F126015C0 | SW | C | 06 | F1 | ME | 260 | 15 | BILL 9 | B09 | S2 | FF | R00 | ACF07 | 260 |  |  |  |  |  |  |  |  |  |  |  | MEP |  |  |  | FF |  |  |  |
| S06F122025C0 |  | SW-06 ; Final Fix, Inst of Sanitary Ware (Faculty Office) | 36d | 2012-04-30 | 2012-06-11 | S06F109205C0, S06F109305C0, A10230 FS+148d |  |  |  |  | 90.33d | 0d | PLUMBING [1542 h]; Cost |  |  | S06F122025C0 | SW | C | 06 | F1 | ME | 220 | 25 | BILL 9 | B09 | S2 | FF | R00 | ACF07 | 220 |  |  |  |  |  |  |  |  |  |  |  | MEP |  |  |  | FF |  |  |  |
| S06F109601C0 |  | SW-06 ; Flooring (Rubber & etc) (Faculty Office) | 42d | 2012-05-14 | 2012-07-03 | S06F109901C0, S06F109501C0, S06F105501C0 FF |  |  |  |  | 28.08d | 0d | RUBBER FLOOR [136 h]; RUBBER FLOOR [324 m2]; Cost |  |  | S06F109601C0 | SW | C | 06 | F1 | FF | 096 | 01 | BILL 9 | B09 | S2 | 03 | R00 | ACF06 | RF |  |  |  |  | 326 | 955 |  |  |  |  |  |  |  |  |  |  |  |  |  |
| S06F109905C0 |  | SW-06 ; Ceiling Prime & 1st coat (Faculty Office) | 30d | 2012-05-14 | 2012-06-19 | S06F109501C0 |  |  |  |  | 142.83d | 0d | CEILING PAINT [53 h]; CEILING PAINT [65 m2]; Cost |  |  | S06F109905C0 | SW | C | 06 | F1 | PA | 099 | 05 | BILL 9 | B09 | S2 | 01 | R00 | ACF06 | 099 |  |  |  |  | 330 | 958 |  |  |  |  |  |  |  |  |  |  |  |  |  |
| S06F121115C0 |  | SW-06 ; 2nd Fix, Inst of Sprinkler droppers (Faculty Office) | 42d | 2012-05-14 | 2012-07-03 | S06F109501C0 |  |  |  |  | 66.45d | 0d | MECHANICAL [1309.2 h]; Cost |  |  | S06F121115C0 | SW | C | 06 | F1 | ME | 211 | 15 | BILL 9 | B09 | S2 | 2F | R00 | ACF07 | 211 |  |  |  |  |  |  |  |  |  |  |  | MEP |  |  |  | 2n |  |  |  |
| S06F123021C0 |  | SW-06 ; 2nd Fix, Inst of Flexible Duct & Plenum boxes (Faculty Office) | 42d | 2012-05-14 | 2012-07-03 | S06F109205C0, S06F109501C0 |  |  |  |  | 66.45d | 0d | MECHANICAL [430.8 h]; Cost |  |  | S06F123021C0 | SW | C | 06 | F1 | ME | 230 | 21 | BILL 9 | B09 | S2 | 2F | R00 | ACF07 | 230 |  |  |  |  |  |  |  |  |  |  |  | MEP |  |  |  | 2n |  |  |  |
| S06F126017C0 |  | SW-06 ; Final Fix, Inst of Ceiling rose (Faculty Office) | 36d | 2012-05-14 | 2012-06-26 | S06F109501C0 |  |  |  |  | 66.45d | 0d | ELECTRICAL [36 h]; Cost |  |  | S06F126017C0 | SW | C | 06 | F1 | ME | 260 | 17 | BILL 9 | B09 | S2 | FF | R00 | ACF07 | 260 |  |  |  |  |  |  |  |  |  |  |  | MEP |  |  |  | FF |  |  |  |
| S06F127002C0 |  | SW-06 ; 2nd Fix, Wiring Droppers (Faculty Office) | 42d | 2012-05-14 | 2012-07-03 | S06F109501C0 |  |  |  |  | 66.45d | 0d | ELECTRICAL [241.2 h]; Cost |  |  | S06F127002C0 | SW | C | 06 | F1 | ME | 270 | 02 | BILL 9 | B09 | S2 | 2F | R00 | ACF07 | 270 |  |  |  |  |  |  |  |  |  |  |  | MEP |  |  |  | 2n |  |  |  |
| S06F127020C0 |  | SW-06 ; 2nd Fix, Inst of ELV Equipment (Panels) (Faculty Office) | 54d | 2012-05-14 | 2012-07-17 | S06F109205C0, S06F109501C0 |  |  |  |  | 42.33d | 0d | ELECTRICAL [1868.4 h]; Cost |  |  | S06F127020C0 | SW | C | 06 | F1 | ME | 270 | 20 | BILL 9 | B09 | S2 | 2F | R00 | ACF04 | 270 |  |  |  |  |  |  |  |  |  |  |  | MEP |  |  |  | 2n |  | E |  |
| S06F140303C0 |  | SW-06 ; Final Fix, Pneumatic tube (Faculty Office) | 36d | 2012-05-14 | 2012-06-26 | S06F109901C0, S06F109501C0 |  |  |  |  | 114.33d | 76.08d | MECHANICAL [1036.8 h]; Cost |  |  | S06F140303C0 | SW | C | 06 | F1 | ME | 403 | 03 | BILL 9 | B09 | S2 | FF | R00 | ACF07 | 403 |  |  |  |  |  |  |  |  |  |  |  | MEP |  |  |  | FF |  |  |  |
| S06F122021C0 |  | SW-06 ; Final Fix, Terminate Sanitary Ware & Appliances (Faculty Office) | 36d | 2012-06-11 | 2012-07-24 | S06F122011C0, S06F122025C0 |  |  |  |  | 90.33d | 52.08d | PLUMBING [1246.8 h]; Cost |  |  | S06F122021C0 | SW | C | 06 | F1 | ME | 220 | 21 | BILL 9 | B09 | S2 | FF | R00 | ACF07 | 220 |  |  |  |  |  |  |  |  |  |  |  | MEP |  |  |  | FF |  |  |  |
| S06F109903C0 |  | SW-06 ; Wall Final Paint (Faculty Office) | 30d | 2012-06-19 | 2012-07-24 | S06F109901C0, S06F109905C0 |  |  |  |  | 142.83d | 78d | WALL PAINT [459 h]; WALL PAINT [571 m2]; Cost |  |  | S06F109903C0 | SW | C | 06 | F1 | PA | 099 | 03 | BILL 9 | B09 | S2 | 02 | R00 | ACF06 | 099 |  |  |  |  | 329 | 957 |  |  |  |  |  |  |  |  |  |  |  |  |  |
| S06F126003C0 |  | SW-06 ; Final Fix, Inst of Light fittings (Faculty Office) | 42d | 2012-06-26 | 2012-08-14 | S06F109501C0, S06F126017C0 |  |  |  |  | 66.45d | 0d | ELECTRICAL [4813.2 h]; Cost |  |  | S06F126003C0 | SW | C | 06 | F1 | ME | 260 | 03 | BILL 9 | B09 | S2 | FF | R00 | ACF07 | 260 |  |  |  |  |  |  |  |  |  |  |  | MEP |  |  |  | FF |  |  |  |
| S06F108107C0 |  | SW-06 ; Doors (Faculty Office) | 36d | 2012-07-03 | 2012-08-14 | S06F108103C0, S06F109901C0, S06F109601C0 |  |  |  |  | 96.95d | 0d | ASSORTED DOORS [390 h]; ASSORTED DOORS [39 no]; Cost |  |  | S06F108107C0 | SW | C | 06 | F1 | DO | 081 | 07 | BILL 9 | B09 | S2 | DR | R00 | ACF06 | 081 |  |  |  |  | 317 | 948 |  |  |  |  |  |  |  |  |  |  | 08 |  |  |
| S06F121113C0 |  | SW-06 ; Final Fix, Inst of Sprinklers head/ Extinguisher (Faculty Office) | 36d | 2012-07-03 | 2012-08-14 | S06F109501C0, S06F121115C0 |  |  |  |  | 66.45d | 0d | MECHANICAL [237.6 h]; Cost |  |  | S06F121113C0 | SW | C | 06 | F1 | ME | 211 | 13 | BILL 9 | B09 | S2 | FF | R00 | ACF07 | 211 |  |  |  |  |  |  |  |  |  |  |  | MEP |  |  |  | FF |  |  |  |
| S06F123019C0 |  | SW-06 ; Final Fix, Inst of Grilles & Diffusers (Faculty Office) | 36d | 2012-07-03 | 2012-08-14 | S06F109501C0, S06F123021C0 |  |  |  |  | 66.45d | 0d | MECHANICAL [835.2 h]; Cost |  |  | S06F123019C0 | SW | C | 06 | F1 | ME | 230 | 19 | BILL 9 | B09 | S2 | FF | R00 | ACF07 | 230 |  |  |  |  |  |  |  |  |  |  |  | MEP |  |  |  | FF |  |  |  |
| S06F127030C0 |  | SW-06 ; Final Fix, Inst of ELV devise (Detector/Speaker) (Faculty Office) | 36d | 2012-07-03 | 2012-08-14 | S06F109501C0, S06F127002C0 |  |  |  |  | 66.45d | 0d | ELECTRICAL [1348.8 h]; Cost |  |  | S06F127030C0 | SW | C | 06 | F1 | ME | 270 | 30 | BILL 9 | B09 | S2 | FF | R00 | ACF07 | 270 |  |  |  |  |  |  |  |  |  |  |  | MEP |  |  |  | FF |  |  |  |
| S06F106101C0 |  | SW-06 ; Wood / caseworks (Faculty Office) | 66d | 2012-07-09 | 2012-09-25 | OGNMU00031S0, S06CO04406C0, S06F109501C0, S06F109901C0, SAFWA00105M0, SAFCI22002R02 FS+178d, S06F109601C0 |  |  |  |  | 24d | 0d | WOOD WORK/CASEWORK [136.72 no]; WOOD WORK/CASEWORK [5097 h]; Cost |  |  | S06F106101C0 | SW | C | 06 | F1 | WO | 061 | 01 | BILL 9 | B09 | S2 | WW | R00 | ACF06 | 061 |  |  |  |  | 332 | 960 |  |  |  |  |  |  |  |  |  |  |  |  |  |
| S06F109701C0 |  | SW-06 ; Wall finishes (ST, WD, WC) (Faculty Office) | 54d | 2012-07-17 | 2012-09-20 | S06F126011C0, S06F127020C0, SAFCI22002R02 FS+158d, S06F109601C0 |  |  |  |  | 42.33d | 0d | ASSORTED WALL FINISH [872 h]; ASSORTED WALL FINISH [1001 m2]; Cost |  |  | S06F109701C0 | SW | C | 06 | F1 | WF | 097 | 01 | BILL 9 | B09 | S2 | 01 | R00 | ACF06 | 097 |  |  |  |  | 105 | 1002 |  |  |  |  |  |  |  |  |  |  |  |  |  |
| S06F101006C0 |  | SW-06 ; 2nd, Ceiling Inspection by Consultants (Faculty Office) | 5.88d | 2012-08-14 | 2012-08-23 | S06F121115C0, S06F123009C0, S06F123015C0, S06F127002C0, S06F109501C0, S06F121113C0, S06F123019C0, S06F126003C0, S06F126017C0, S06F127030C0, S06F126015C0 |  |  |  |  | 66.45d | 28.2d | Labor General [0.6 h]; Cost |  |  | S06F101006C0 | SW | C | 06 | F1 | ME | 010 | 06 | BILL 9 | B09 | S2 | CI | R00 | ACF07 | 010 |  |  |  |  |  |  |  |  |  |  |  | MEP |  |  |  | 2n |  |  |  |
| S06F108709C0 |  | SW-06 ; Ironmongery (Faculty Office) | 27.88d | 2012-08-14 | 2012-09-18 | S06F108107C0 |  |  |  |  | 96.95d | 58.7d | IRONMONGERY [410 h]; IRONMONGERY [41 no]; Cost |  |  | S06F108709C0 | SW | C | 06 | F1 | DO | 087 | 09 | BILL 9 | B09 | S2 | IM | R00 | ACF06 | 087 |  |  |  |  | 322 | 951 |  |  |  |  |  |  |  |  |  |  | 08 |  |  |
| S06F111001C0 |  | SW-06 ; Wall Protection (WP, CG, WG, FCG) (Faculty Office) | 24d | 2012-09-20 | 2012-10-18 | S06F109701C0, S06F109903C0 SS |  |  |  |  | 70.83d | 32.58d | Labor General [2 h]; Cost |  |  | S06F111001C0 | SW | C | 06 | F1 | WF | 110 | 01 | BILL 9 | B09 | S2 | 03 | R00 | ACF08 | b |  |  |  |  | 326 | 1001 |  |  |  |  |  |  |  |  |  |  |  |  |  |
| S06F109503C0 |  | SW-06 ; Ceiling closure - ACT/Gypsum (Faculty Office) | 24d | 2012-09-26 | 2012-10-23 | S06F101006C0, S06F121115C0, S06F126005C0, S06F127001C0, S06F127002C0, SAFOA09511C1 FF, S06F106101C0, S06F109701C0, S06F123021C0, S06F126007C0, S06F140303C0, S06F122021C0 |  |  |  |  | 38.25d | 0d | ASSORTED CEILING FINISH [781.66 h]; CEILING GYPSUM [23.37 h]; ASSORTED CEILING FINISH [1271 m2]; CEILING GYPSUM [71 m2]; Cost |  |  | S06F109503C0 | SW | C | 06 | F1 | CE | 095 | 03 | BILL 9 | B09 | S2 | 02 | R00 | ACF06 | 095 |  |  |  |  | 324 | 953 |  |  |  |  |  |  |  |  |  |  |  |  | R3 |
| S06F111003C0 |  | SW-06 ; FF & E (Faculty Office) | 24d | 2012-09-26 | 2012-10-23 | S06F109601C0, S06F106101C0 |  |  |  |  | 66.75d | 28.5d | FF&E [162 h]; FF&E [86.45 no]; Cost |  |  | S06F111003C0 | SW | C | 06 | F1 | WO | 110 | 03 | BILL 9 | B09 | S2 | FF&E | R00 | ACF08 | a |  |  |  |  | 333 | 961 |  |  |  |  |  |  |  |  |  |  |  |  |  |
| S06F122029C0 |  | SW-06 ; Final Fix, Medical Gas pipe (Faculty Office) | 18d | 2012-09-26 | 2012-10-16 | S06F109501C0, S06F106101C0 |  |  |  |  | 62.25d | 24d | PLUMBING [187.2 h]; Cost |  |  | S06F122029C0 | SW | C | 06 | F1 | ME | 220 | 29 | BILL 9 | B09 | S2 | FF | R00 | ACF07 | 220 |  |  |  |  |  |  |  |  |  |  |  | MEP |  |  |  | FF |  |  |  |
| S06F109670C1 |  | SW-06, Carpet Tile Finish (Faculty Office) | 0d | 2012-10-24 | 2012-10-24 | S06F109903C0 SS, S06F109907C0 SS |  |  |  |  | 48.25d | 22.55d | Cost |  |  |  | SW | C | 06 | F1 | FF | 096 |  |  | B09 |  |  | R00 | ACF06 | CPT |  |  |  |  |  |  |  |  |  |  |  | CPT |  |  |  |  |  |  |  |
| S06F109907C0 |  | SW-06 ; Ceiling Final paint (Faculty Office) | 18d | 2012-10-24 | 2012-11-17 | S06F109601C0, S06F109905C0, S06F109503C0 |  |  |  |  | 48.25d | 0d | CEILING PAINT [29 h]; CEILING PAINT [35 m2]; Cost |  |  | S06F109907C0 | SW | C | 06 | F1 | PA | 099 | 07 | BILL 9 | B09 | S2 | 02 | R00 | ACF06 | 099 |  |  |  |  | 331 | 959 |  |  |  |  |  |  |  |  |  |  |  |  |  |
| S06F122027C0 |  | SW-06 ; Final Fix, Inst of All drain (Faculty Office) | 18d | 2012-10-24 | 2012-11-17 | S06F109305C0, S06F109503C0 |  |  |  |  | 38.25d | 0d | PLUMBING [310.8 h]; Cost |  |  | S06F122027C0 | SW | C | 06 | F1 | ME | 220 | 27 | BILL 9 | B09 | S2 | FF | R00 | ACF07 | 220 |  |  |  |  |  |  |  |  |  |  |  | MEP |  |  |  | FF |  |  |  |
| S06F126019C0 |  | SW-06 ; Final Fix, Inst of Switch/Sockets (Faculty Office) | 18d | 2012-10-24 | 2012-11-17 | S06F109901C0, S06F109503C0 |  |  |  |  | 38.25d | 0d | ELECTRICAL [256.8 h]; Cost |  |  | S06F126019C0 | SW | C | 06 | F1 | ME | 260 | 19 | BILL 9 | B09 | S2 | FF | R00 | ACF07 | 260 |  |  |  |  |  |  |  |  |  |  |  | MEP |  |  |  | FF |  |  |  |

| ID | WBS | Activity | Duration | Start | Finish | Predecessors | Complete | Remaining | Planned start | Planned finish | Total float | Free float | Resources | Cost | Actual cost | change id | CCAD BUILDING(SET) | CCAD PHASE(SET) | CCAD FLOOR(SET) | CCAD ZONE(SET) | CCAD WORK(SET) | CCAD SECTION(SET) | CCAD SERIAL No.(SET) | CCAD CBS(SET) | CCAD BILL(SET) | CCAD HANDOVER(SET) | CCAD TAG(SET) | CCAD REV(SET) | CCADACF (SET) | CCAD SSCF | user_number8 | user_integer1 | user_integer2 | user_number7 | Change Order # | NEW ACTIVITY ID | RENZ % COMPLETE | P_811 | P_711 | U% | CCAD CSA | Act Selector % | July2011 Target% Complete | CCAD SUB ZONE MEP(SET) | CCAD DIVISION(SET) | CCAD MEQ | R3 Finish |
| --- | --- | --- | --- | --- | --- | --- | --- | --- | --- | --- | --- | --- | --- | --- | --- | --- | --- | --- | --- | --- | --- | --- | --- | --- | --- | --- | --- | --- | --- | --- | --- | --- | --- | --- | --- | --- | --- | --- | --- | --- | --- | --- | --- | --- | --- | --- | --- |
|  | 10 | **Precommissioning Tesing & snagging (Faculty Office)** |  | 2012-11-18 | 2013-01-09 |  |  |  |  |  |  |  |  |  |  |  |  |  |  |  |  |  |  |  |  |  |  |  |  |  |  |  |  |  |  |  |  |  |  |  |  |  |  |  |  |  |  |
| S06TS01804C0 |  | SW-06 ; MEP de-snag, FIREM sign-off | 10.5d | 2012-11-18 | 2012-11-29 | S06F126015C0, S06F122025C0, S06F122027C0, S06F121113C0, S06F123019C0, S06F122029C0, S06F126017C0, S06F126003C0, S06F127030C0, S06F122021C0, S06F140303C0, S06F126019C0 |  |  |  |  | 38.25d | 0d | TESTING & COMMISSIONING [510 h]; Cost |  |  | S06TS01801C0 | SW | C | 06 | TS | SC | 018 | 01 | BILL 9 | B09 | S2 | 01 | R00 | ACF07 | 018 |  |  |  |  |  |  |  |  |  |  |  |  |  |  |  |  |  |
| S06TS01802C20 |  | SW-06 ; Touch-up & Clean / JV inspection /CIR /De-snag | 13.5d | 2012-11-29 | 2012-12-16 | S06F106101C0, S06F108709C0, S06F109305C0, S06F109601C0, S06F109701C0, S06F109903C0, S06F109907C0, S06F111001C0, S06F111003C0, S06TS01804C0, S06F105501C0, S06F109503C0 |  |  |  |  | 38.25d | 12.55d | TESTING & COMMISSIONING [128 h]; Cost |  |  | S06TS01802C0 | SW | C | 06 | TS | SC | 018 | 02 | BILL 9 | B09 | S2 | 02 | R00 | ACF07 | 018 |  |  |  |  |  |  |  |  |  |  |  |  |  |  |  |  |  |
| S06TS01808C0 |  | SW-06 ; Consultant's final de-snag inspection | 6.75d | 2012-12-31 | 2013-01-09 | S06TS01802C20, S06TS01809C0 |  |  |  |  | 25.7d | 1.7d | Labor General [1 h]; Cost |  |  | S06TS01803C0 | SW | C | 06 | TS | SC | 018 | 03 | BILL 9 | B09 | S2 | 03 | R00 | ACF07 | 018 |  |  |  |  |  |  |  |  |  |  |  |  |  |  |  |  |  |
|  | 05 | **Artrium / Corridor (6~8 th floor)** |  | 2011-05-25 | 2012-12-31 |  |  |  |  |  |  |  |  |  |  |  |  |  |  |  |  |  |  |  |  |  |  |  |  |  |  |  |  |  |  |  |  |  |  |  |  |  |  |  |  |  |  |
| S06AC09201C0 |  | SW-06 ; Metal Studs (Artrium / Corridor) | 75d | 2011-05-25 A | 2011-10-22 | S06AC23001C0 SS | 75% | 18.75d | 2011-08-07 | 2011-11-05 | 35.25d | 0d | PARTITIONS [635 h]; PARTITIONS - Metal Studs [61 m]; Cost |  |  | S06AC09201C0 | SW | C | 06 | AC | PT | 092 | 01 | BILL 9 | B09 | S2 | 1F | R00 | ACF06 | 092 | 0 | 0 | 0 | 0 | 313 | 944 | 5 | 70 | 60 | 75 | GP | PMS |  |  |  |  |  |
| S06AC21111C0 |  | SW-06 ; 1st Fix, Inst of Sprinkler main pipe (Artrium / Corridor) | 66d | 2011-07-10 A | 2011-11-27 | S06AC22019C0 SS+12d, S06AC23001C0 | 40% | 39.6d | 2011-09-27 | 2011-12-19 | 58.7d | 0d | MECHANICAL [793.2 h]; Cost [43268 AED] | 43,267.97 | 17,307.19 | S06AC21111C0 | SW | C | 06 | AC | ME | 211 | 11 | BILL 9 | B09 | S2 | 1F | R00 | ACF04 | 211 | 0 | 0 | 0 | 0 |  |  |  | 30 | 20 | 40 | MEP | M1F | 45 | 1S |  |  |  |
| S06AC21117C0 |  | SW-06 ; 1st Fix, Inst of Sprinkler branch pipe (Artrium / Corridor) | 66d | 2011-07-10 A | 2012-01-15 | S06AC09201C0, S06AC21111C0 | 40% | 39.6d | 2011-11-15 | 2012-02-05 | 105.5d | 46.8d | MECHANICAL [682.8 h]; Cost [37306.8 AED] | 37,306.8 | 14,922.72 | S06AC21117C0 | SW | C | 06 | AC | ME | 211 | 17 | BILL 9 | B09 | S2 | 1F | R00 | ACF04 | 211 | 0 | 0 | 0 | 0 |  |  |  | 30 | 20 | 40 | MEP | M1F |  | 1S |  |  |  |
| S06AC22019C0 |  | SW-06 ; 1st Fix, Inst of Drainage pipe (ceiling) (Artrium / Corridor) | 66d | 2011-07-10 A | 2011-11-27 | S06AC23001C0, S06AC26013C0 SS+14d | 40% | 39.6d | 2011-09-13 | 2011-12-05 | 58.7d | 0d | PLUMBING [310.8 h]; Cost [16770.4 AED] | 16,770.39 | 6,708.16 | S06AC22019C0 | SW | C | 06 | AC | ME | 220 | 19 | BILL 9 | B09 | S2 | 1F | R00 | ACF04 | 220 | 0 | 0 | 0 | 0 |  |  |  | 30 | 15 | 40 | MEP | M1F | 65 | 1S |  |  |  |
| S06AC23017C0 |  | SW-06 ; 1st Fix, Inst of CHW pipe (Artrium / Corridor) | 72d | 2011-07-10 A | 2011-11-22 | S06AC21111C0 SS+14d, S06AC23001C0 | 50% | 36d | 2011-10-13 | 2012-01-12 | 58.7d | 0d | MECHANICAL [1687.2 h]; Cost [92145.2 AED] | 92,145.18 | 46,072.59 | S06AC23017C0 | SW | C | 06 | AC | ME | 230 | 17 | BILL 9 | B09 | S2 | 1F | R00 | ACF04 | 230 | 0 | 0 | 0 | 0 |  |  |  | 40 | 30 | 50 | MEP | M1F | 30 | 1S |  |  |  |
| S06AC23023C0 |  | SW-06 ; 1st Fix, Inst of Main Ducting (Artrium / Corridor) | 72d | 2011-07-10 A | 2011-11-22 | S06AC23001C0, S06AC23017C0 SS+10d | 50% | 36d | 2011-10-25 | 2012-01-24 | 100.7d | 0d | MECHANICAL [6650.4 h]; Cost [363211 AED] | 363,210.66 | 181,605.33 | S06AC23023C0 | SW | C | 06 | AC | ME | 230 | 23 | BILL 9 | B09 | S2 | 1F | R00 | ACF04 | 230 | 0 | 0 | 0 | 0 |  |  |  | 35 | 25 | 40 | MEP | M1F | 50 | 1S |  |  |  |
| S06AC26001C0 |  | SW-06 ; 1st Fix, Inst of Trunking/Conduiting (Artrium / Corridor) | 66d | 2011-07-10 A | 2011-11-19 | S06AC23001C0, S06S307807C0 | 50% | 33d | 2011-07-28 | 2011-10-16 | 58.7d | 0d | ELECTRICAL [447.6 h]; Cost [24105.1 AED] | 24,105.11 | 12,052.55 | S06AC26001C0 | SW | C | 06 | AC | ME | 260 | 01 | BILL 9 | B09 | S2 | 1F | R00 | ACF04 | 260 | 0 | 0 | 0 | 0 |  |  |  | 30 | 15 | 50 | MEP | M1F | 25 | 1S |  |  |  |
| S06AC26013C0 |  | SW-06 ; 1st Fix, Inst of Cable Tray (Artrium / Corridor) | 60d | 2011-07-10 A | 2011-10-15 | S06AC23001C0, S06AC27010C0 SS+10d, S06S307807C0 | 90% | 6d | 2011-08-25 | 2011-11-09 | 58.7d | 0d | ELECTRICAL [231.6 h]; Cost [13047.4 AED] | 13,047.37 | 11,742.63 | S06AC26013C0 | SW | C | 06 | AC | ME | 260 | 13 | BILL 9 | B09 | S2 | 1F | R00 | ACF04 | 260 | 0 | 0 | 0 | 0 |  |  |  |  |  |  | MEP | M1F | 25 | 1S |  |  |  |
| S06AC27010C0 |  | SW-06 ; 1st Fix, Inst of Trunking for ELV system (Artrium / Corridor) | 200d | 2011-07-10 A | 2011-10-19 | S06AC23001C0, S06AC26001C0 SS+14d, S06S307807C0 | 95% | 10d | 2011-08-14 | 2012-04-14 | 58.7d | 0d | ELECTRICAL [991.2 h]; Cost [51056.8 AED] | 51,056.81 | 48,503.97 | S06AC27010C0 | SW | C | 06 | AC | ME | 270 | 10 | BILL 9 | B09 | S2 | 1F | R00 | ACF04 | 270 |  |  |  |  |  |  |  | 95 | 90 |  | MEP | M1F | 25 | 1S |  |  |  |
| S06AC09203C0 |  | SW-06 ; Partitions 1st face (Artrium / Corridor) | 75d | 2011-07-13 A | 2011-11-30 | S06AC09201C0 | 60% | 30d | 2011-08-28 | 2011-11-29 | 88.25d | 12d | PARTITIONS [61 m]; PARTITIONS [500 h]; Cost |  |  | S06AC09203C0 | SW | C | 06 | AC | PT | 092 | 03 | BILL 9 | B09 | S2 | 2F | R00 | ACF06 | 092 | 0 | 0 | 0 | 0 | 314 | 945 |  | 50 | 20 | 60 | GP | P1F |  |  |  |  |  |
| S06AC23001C0 |  | SW-06 ; 1st Fix, Inst. of Supports for MEP (Artrium / Corridor) | 42d | 2011-09-05 A | 2011-10-08 | S06S307807C0, SR8S303399C0 | 85% | 6.3d | 2011-09-01 | 2011-10-19 | 35.25d | 0d | MECHANICAL [536.4 h]; Cost [30275.7 AED] | 30,275.67 | 25,734.32 | S06AC23001C0 | SW | C | 06 | AC | ME | 230 | 01 | BILL 9 | B09 | S2 | 1F | R00 | ACF04 | 230 |  |  |  |  |  |  |  |  |  | 85 | MEP | M1F | 25 | 1S |  |  |  |
| S06AC26009C0 |  | SW-06 ; 2nd Fix, Inst of Wall conduites (Artrium / Corridor) | 42d | 2011-10-22 | 2011-12-15 | S06AC09201C0 |  |  |  |  | 76.25d | 0d | ELECTRICAL [447.6 h]; Cost |  |  | S06AC26009C0 | SW | C | 06 | AC | ME | 260 | 09 | BILL 9 | B09 | S2 | 2F | R00 | ACF07 | 260 |  |  |  |  |  |  |  |  |  |  | MEP |  | 25 | 2n |  |  |  |
| S06AC08103C0 |  | SW-06 ; Door Frames (Artrium / Corridor) | 36d | 2011-11-15 | 2011-12-28 | S06AC09201C0, GNHE08101C0 FS+69d, S05M208101C0 SS+3d |  |  |  |  | 35.5d | 0d | ASSORTED DOORS [27 h]; Cost |  |  | S06AC08103C0 | SW | C | 06 | AC | DO | 081 | 03 | BILL 9 | B09 | S2 | DF | R00 | ACF06 | 081 |  |  |  |  | 316 | 947 |  |  |  |  |  |  |  |  | 08 |  |  |
| S06AC27001C0 |  | SW-06 ; 1st Fix, Wiring/ Cabling work (Artrium / Corridor) | 48d | 2011-11-19 | 2012-01-17 | S06AC26001C0, S06AC26013C0, S06AC27010C0 |  |  |  |  | 103.7d | 45d | ELECTRICAL [241.2 h]; Cost |  |  | S06AC27001C0 | SW | C | 06 | AC | ME | 270 | 01 | BILL 9 | B09 | S2 | 1F | R00 | ACF04 | 270 |  |  |  |  |  |  |  |  |  |  | MEP | M1F |  | 1S |  |  |  |
| S06AC23008C0 |  | SW-06 ; 1st Fix, Inst of VCD's/FD's (Artrium / Corridor) | 48d | 2011-11-22 | 2012-01-21 | S06AC23023C0 |  |  |  |  | 100.7d | 42d | MECHANICAL [1111.2 h]; Cost |  |  | S06AC23008C0 | SW | C | 06 | AC | ME | 230 | 08 | BILL 9 | B09 | S2 | 1F | R00 | ACF04 | 230 |  |  |  |  |  |  |  |  |  |  | MEP | M1F |  | 1S |  |  |  |
| S06AC23009C0 |  | SW-06 ; 2nd Fix, Inst of VAV'S CHW connection (Artrium / Corridor) | 42d | 2011-11-22 | 2012-01-14 | S06AC23017C0 |  |  |  |  | 58.7d | 0d | MECHANICAL [1282.8 h]; Cost |  |  | S06AC23009C0 | SW | C | 06 | AC | ME | 230 | 09 | BILL 9 | B09 | S2 | 2F | R00 | ACF07 | 230 |  |  |  |  |  |  |  |  |  | 0 | MEP |  |  | 2n |  |  |  |
| S06AC09205C0 |  | SW-06 ; Partitions Closing (Artrium / Corridor) | 48d | 2011-12-15 | 2012-02-12 | S06AC09203C0, S06AC22019C0, SAFOA09212C1 FF, S06AC26009C0, S06AC08103C0 FF |  |  |  |  | 76.25d | 0d | PARTITIONS [61 m]; PARTITIONS [651 h]; Cost |  |  | S06AC09205C0 | SW | C | 06 | AC | PT | 092 | 05 | BILL 9 | B09 | S2 | FF | R00 | ACF06 | 092 |  |  |  |  | 315 | 946 |  |  |  |  | GP | P2F |  |  |  |  |  |
| S06AC23015C0 |  | SW-06 ; 2nd Fix, Insulation of CHW pipe & Duct (Artrium / Corridor) | 48d | 2012-01-14 | 2012-03-11 | S06AC23009C0, S06AC23017C0, S06AC23023C0 |  |  |  |  | 58.7d | 0d | MECHANICAL [3980.4 h]; Cost |  |  | S06AC23015C0 | SW | C | 06 | AC | ME | 230 | 15 | BILL 9 | B09 | S2 | 2F | R00 | ACF07 | 230 |  |  |  |  |  |  |  |  |  |  | MEP |  |  | 2n |  |  |  |
| S06AC05501C0 |  | SW-06 ; Handrails & balustrade (Artrium / Corridor) | 32.12d | 2012-02-12 | 2012-03-20 | S06AC09205C0 |  |  |  |  | 140.12d | 69.42d | SECONDARY STEEL [54 h]; Cost |  |  | S06AC05501C0 | SW | C | 06 | AC | SW | 055 | 01 | BILL 9 | B09 | S2 | 01 | R00 | ACF03 | a |  |  |  |  |  |  |  |  |  |  |  |  |  |  |  |  |  |
| S06AC26005C0 |  | SW-06 ; 2nd Fix, Wiring for Power/Lighting/Emergency (Artrium / Corridor) | 42d | 2012-02-12 | 2012-04-01 | S06AC09205C0 |  |  |  |  | 136.25d | 0d | ELECTRICAL [241.2 h]; Cost |  |  | S06AC26005C0 | SW | C | 06 | AC | ME | 260 | 05 | BILL 9 | B09 | S2 | 2F | R00 | ACF07 | 260 |  |  |  |  |  |  |  |  |  |  | MEP |  |  | 2n |  |  |  |
| S06AC26007C0 |  | SW-06 ; 2nd Fix, Cable Pulling (Artrium / Corridor) | 42d | 2012-02-12 | 2012-04-01 | S06AC09201C0 SS+6d, S06AC09205C0 |  |  |  |  | 178.25d | 119.55d | ELECTRICAL [1532.4 h]; Cost |  |  | S06AC26007C0 | SW | C | 06 | AC | ME | 260 | 07 | BILL 9 | B09 | S2 | 2F | R00 | ACF07 | 260 |  |  |  |  |  |  |  |  |  |  | MEP |  |  | 2n |  |  |  |
| S06AC26011C0 |  | SW-06 ; 2nd Fix, Inst of Equipment (DB) (Artrium / Corridor) | 48d | 2012-02-12 | 2012-04-08 | S06AC09205C0 |  |  |  |  | 124.25d | 65.55d | ELECTRICAL [646.8 h]; Cost |  |  | S06AC26011C0 | SW | C | 06 | AC | ME | 260 | 11 | BILL 9 | B09 | S2 | 2F | R00 | ACF04 | 260 |  |  |  |  |  |  |  |  |  |  | MEP |  |  | 2n |  | E |  |
| S06AC26053C0 |  | SW-06 ; 2nd Fix, Wiring / Cabling (Artrium / Corridor) | 42d | 2012-02-12 | 2012-04-01 | S06AC09203C0, S06AC09205C0 |  |  |  |  | 76.25d | 17.55d | ELECTRICAL [241.2 h]; Cost |  |  | S06AC26053C0 | SW | C | 06 | AC | ME | 260 | 53 | BILL 9 | B09 | S2 | 2F | R00 | ACF07 | 260 |  |  |  |  | 389 | 977 |  |  |  |  | MEP |  |  | 2n |  |  |  |
| S06AC09501C0 |  | SW-06 ; Ceiling Grid and Service Tile (Artrium / Corridor) | 36d | 2012-03-11 | 2012-04-22 | OGNMU00023S0, OGNMU00037S0, S06AC09205C0 SS+15d, S06AC21117C0, S06AC23008C0, S06AC23009C0, S06AC23015C0, S06AC27001C0, S06AC26053C0 FF |  |  |  |  | 58.7d | 0d | CEILING GRID FOR GYPSUM [238.63 h]; CEILING GRID FOR GYPSUM [20.4 m2]; Cost |  |  | S06AC09501C0 | SW | C | 06 | AC | CE | 095 | 01 | BILL 9 | B09 | S2 | 01 | R00 | ACF06 | 095 |  |  |  |  | 323 | 952 |  |  |  |  |  |  |  |  |  |  |  |
| S06AC26015C0 |  | SW-06 ; Final Fix, Termination & Gladding of Cables (Artrium / Corridor) | 36d | 2012-04-01 | 2012-05-13 | S06AC26005C0 |  |  |  |  | 136.25d | 59.55d | ELECTRICAL [85.2 h]; Cost |  |  | S06AC26015C0 | SW | C | 06 | AC | ME | 260 | 15 | BILL 9 | B09 | S2 | FF | R00 | ACF07 | 260 |  |  |  |  |  |  |  |  |  |  | MEP |  |  | FF |  |  |  |
| S06AC09601C0 |  | SW-06 ; Flooring (stone) (Artrium / Corridor) | 42d | 2012-04-22 | 2012-06-10 | OGNMU00051S0, SAFCI22002R02 FS+58d, S06AC09501C0, S06AC05501C0 FF |  |  |  |  | 70.7d | 0d | STONE FLOOR [1168 h]; STONE FLOOR [647 m2]; Cost |  |  | S06AC09601C0 | SW | C | 06 | AC | FF | 096 | 01 | BILL 9 | B09 | S2 | 09 | R00 | ACF06 | ST |  |  |  |  | 326 | 955 |  |  |  |  |  |  |  |  |  |  | R3 |
| S06AC21115C0 |  | SW-06 ; 2nd Fix, Inst of Sprinkler droppers (Artrium / Corridor) | 42d | 2012-04-22 | 2012-06-10 | S06AC09501C0 |  |  |  |  | 76.7d | 0d | MECHANICAL [1309.2 h]; Cost |  |  | S06AC21115C0 | SW | C | 06 | AC | ME | 211 | 15 | BILL 9 | B09 | S2 | 2F | R00 | ACF07 | 211 |  |  |  |  |  |  |  |  |  |  | MEP |  |  | 2n |  |  |  |
| S06AC23021C0 |  | SW-06 ; 2nd Fix, Inst of Flexible Duct & Plenum boxes (Artrium / Corridor) | 42d | 2012-04-22 | 2012-06-10 | S06AC09205C0, S06AC09501C0 |  |  |  |  | 76.7d | 0d | MECHANICAL [430.8 h]; Cost |  |  | S06AC23021C0 | SW | C | 06 | AC | ME | 230 | 21 | BILL 9 | B09 | S2 | 2F | R00 | ACF07 | 230 |  |  |  |  |  |  |  |  |  |  | MEP |  |  | 2n |  |  |  |
| S06AC26017C0 |  | SW-06 ; Final Fix, Inst of Ceiling rose (Artrium / Corridor) | 36d | 2012-04-22 | 2012-06-03 | S06AC09501C0 |  |  |  |  | 76.7d | 0d | ELECTRICAL [36 h]; Cost |  |  | S06AC26017C0 | SW | C | 06 | AC | ME | 260 | 17 | BILL 9 | B09 | S2 | FF | R00 | ACF07 | 260 |  |  |  |  |  |  |  |  |  |  | MEP |  |  | FF |  |  |  |
| S06AC27002C0 |  | SW-06 ; 2nd Fix, Wiring Droppers (Artrium / Corridor) | 42d | 2012-04-22 | 2012-06-10 | S06AC09501C0 |  |  |  |  | 76.7d | 0d | ELECTRICAL [241.2 h]; Cost |  |  | S06AC27002C0 | SW | C | 06 | AC | ME | 270 | 02 | BILL 9 | B09 | S2 | 2F | R00 | ACF07 | 270 |  |  |  |  |  |  |  |  |  |  | MEP |  |  | 2n |  |  |  |
| S06AC27020C0 |  | SW-06 ; 2nd Fix, Inst of ELV Equipment (Panels) (Artrium / Corridor) | 54d | 2012-04-22 | 2012-06-25 | S06AC09205C0, S06AC09501C0 |  |  |  |  | 58.7d | 0d | ELECTRICAL [1868.4 h]; Cost |  |  | S06AC27020C0 | SW | C | 06 | AC | ME | 270 | 20 | BILL 9 | B09 | S2 | 2F | R00 | ACF04 | 270 |  |  |  |  |  |  |  |  |  |  | MEP |  |  | 2n |  | E |  |
| S06AC26003C0 |  | SW-06 ; Final Fix, Inst of Light fittings (Artrium / Corridor) | 42d | 2012-06-03 | 2012-07-23 | S06AC09501C0, S06AC26017C0 |  |  |  |  | 76.7d | 0d | ELECTRICAL [4813.2 h]; Cost |  |  | S06AC26003C0 | SW | C | 06 | AC | ME | 260 | 03 | BILL 9 | B09 | S2 | FF | R00 | ACF07 | 260 |  |  |  |  |  |  |  |  |  |  | MEP |  |  | FF |  |  |  |
| S06AC08107C0 |  | SW-06 ; Doors (Artrium / Corridor) | 36d | 2012-06-10 | 2012-07-23 | OGNMU00059S0, OGNMU00065S0, S06AC08103C0, S06AC09601C0 |  |  |  |  | 112.95d | 0d | ASSORTED DOORS [110 h]; ASSORTED DOORS [11 no]; Cost |  |  | S06AC08107C0 | SW | C | 06 | AC | DO | 081 | 07 | BILL 9 | B09 | S2 | DR | R00 | ACF06 | 081 |  |  |  |  | 317 | 948 |  |  |  |  |  |  |  |  | 08 |  |  |
| S06AC11003C0 |  | SW-06 ; FF & E (Artrium / Corridor) | 24d | 2012-06-10 | 2012-07-09 | S06AC09601C0 |  |  |  |  | 144.95d | 86.25d | FF&E [47 h]; FF&E [24.85 no]; Cost |  |  | S06AC11003C0 | SW | C | 06 | AC | WO | 110 | 03 | BILL 9 | B09 | S2 | FF&E | R00 | ACF08 | a |  |  |  |  | 333 | 961 |  |  |  |  |  |  |  |  |  |  |  |
| S06AC21113C0 |  | SW-06 ; Final Fix, Inst of Sprinklers head/ Extinguisher (Artrium / Corridor) | 36d | 2012-06-10 | 2012-07-23 | S06AC09501C0, S06AC21115C0 |  |  |  |  | 76.7d | 0d | MECHANICAL [237.6 h]; Cost |  |  | S06AC21113C0 | SW | C | 06 | AC | ME | 211 | 13 | BILL 9 | B09 | S2 | FF | R00 | ACF07 | 211 |  |  |  |  |  |  |  |  |  |  | MEP |  |  | FF |  |  |  |
| S06AC23019C0 |  | SW-06 ; Final Fix, Inst of Grilles & Diffusers (Artrium / Corridor) | 36d | 2012-06-10 | 2012-07-23 | S06AC09501C0, S06AC23021C0 |  |  |  |  | 76.7d | 0d | MECHANICAL [835.2 h]; Cost |  |  | S06AC23019C0 | SW | C | 06 | AC | ME | 230 | 19 | BILL 9 | B09 | S2 | FF | R00 | ACF07 | 230 |  |  |  |  |  |  |  |  |  |  | MEP |  |  | FF |  |  |  |
| S06AC27030C0 |  | SW-06 ; Final Fix, Inst of ELV devise (Detector/Speaker) (Artrium / Corridor) | 36d | 2012-06-10 | 2012-07-23 | S06AC09501C0, S06AC27002C0 |  |  |  |  | 76.7d | 0d | ELECTRICAL [1348.8 h]; Cost |  |  | S06AC27030C0 | SW | C | 06 | AC | ME | 270 | 30 | BILL 9 | B09 | S2 | FF | R00 | ACF07 | 270 |  |  |  |  |  |  |  |  |  |  | MEP |  |  | FF |  |  |  |
| S06AC09701C0 |  | SW-06 ; Wall finishes (ST, WD, WC) (Artrium / Corridor) | 48d | 2012-06-25 | 2012-08-22 | S06AC26011C0, S06AC27020C0, S06AC09601C0 |  |  |  |  | 58.7d | 0d | ASSORTED WALL FINISH [251 h]; ASSORTED WALL FINISH [288 m2]; Cost |  |  | S06AC09701C0 | SW | C | 06 | AC | WF | 097 | 01 | BILL 9 | B09 | S2 | 01 | R00 | ACF06 | 097 |  |  |  |  | 105 | 1002 |  |  |  |  |  |  |  |  |  |  |  |
| S06AC01006C0 |  | SW-06 ; 2nd, Ceiling Inspection by Consultants (Artrium / Corridor) | 6d | 2012-07-23 | 2012-07-30 | S06AC21115C0, S06AC23009C0, S06AC23015C0, S06AC27002C0, S06AC09501C0, S06AC21113C0, S06AC23019C0, S06AC26003C0, S06AC26017C0, S06AC27030C0, S06AC26015C0 |  |  |  |  | 76.7d | 18d | Labor General [0.6 h]; Cost |  |  | S06AC01006C0 | SW | C | 06 | AC | ME | 010 | 06 | BILL 9 | B09 | S2 | CI | R00 | ACF07 | 010 |  |  |  |  |  |  |  |  |  |  | MEP |  |  | 2n |  |  |  |
| S06AC08709C0 |  | SW-06 ; Ironmongery (Artrium / Corridor) | 20d | 2012-07-23 | 2012-08-15 | OGNMU00059S0, S06AC08107C0 |  |  |  |  | 112.95d | 54.25d | IRONMONGERY [120 h]; IRONMONGERY [12 no]; Cost |  |  | S06AC08709C0 | SW | C | 06 | AC | DO | 087 | 09 | BILL 9 | B09 | S2 | IM | R00 | ACF06 | 087 |  |  |  |  | 322 | 951 |  |  |  |  |  |  |  |  | 08 |  |  |
| S06AC09503C0 |  | SW-06 ; Ceiling closure - WDC (Artrium / Corridor) | 20.25d | 2012-08-22 | 2012-09-15 | S06AC01006C0, S06AC21115C0, S06AC26005C0, S06AC27001C0, S06AC27002C0, SAFOA09511C1 FF, S06AC09701C0, S06AC23021C0, S06AC26007C0 |  |  |  |  | 58.7d | 0d | ASSORTED CEILING FINISH [224.47 h]; CEILING GYPSUM [6.76 h]; ASSORTED CEILING FINISH [365 m2]; CEILING GYPSUM [20 m2]; Cost |  |  | S06AC09503C0 | SW | C | 06 | AC | CE | 095 | 03 | BILL 9 | B09 | S2 | 02 | R00 | ACF06 | 095 |  |  |  |  | 324 | 953 |  |  |  |  |  |  |  |  |  |  |  |
| S06AC11001C0 |  | SW-06 ; Wall Protection (WP, CG, WG, FCG) (Artrium / Corridor) | 24d | 2012-08-22 | 2012-09-19 | OGNMU00063S0 SS, S06AC09701C0 |  |  |  |  | 84.95d | 26.25d | Labor General [2 h]; Cost |  |  | S06AC11001C0 | SW | C | 06 | AC | WF | 110 | 01 | BILL 9 | B09 | S2 | 03 | R00 | ACF08 | b |  |  |  |  | 326 | 1001 |  |  |  |  |  |  |  |  |  |  |  |
| S06AC26019C0 |  | SW-06 ; Final Fix, Inst of Switch/Sockets (Artrium / Corridor) | 18d | 2012-09-15 | 2012-10-06 | S06AC09501C0, S06AC09503C0 |  |  |  |  | 58.7d | 0d | ELECTRICAL [256.8 h]; Cost |  |  | S06AC26019C0 | SW | C | 06 | AC | ME | 260 | 19 | BILL 9 | B09 | S2 | FF | R00 | ACF07 | 260 |  |  |  |  |  |  |  |  |  |  | MEP |  |  | FF |  |  |  |

| ID | WBS | Activity | Duration | Start | Finish | Predecessors | Complete | Remaining | Planned start | Planned finish | Total float | Free float | Resources | change id | CCAD BUILDING(SET) | CCAD PHASE(SET) | CCAD FLOOR(SET) | CCAD ZONE(SET) | CCAD WORK(SET) | CCAD SECTION(SET) | CCAD SERIAL No.(SET) | CCAD CBS(SET) | CCAD BILL(SET) | CCAD HANDOVER(SET) | CCAD TAG(SET) | CCAD REV(SET) | CCADACF (SET) | CCAD SSCF | Change Order # | NEW ACTIVITY ID | P_811 | P_711 | CCAD CSA | Act Selector % | July2011 Target% Complete | CCAD SUB ZONE MEP(SET) | CCAD DIVISION(SET) | U% | CCAD MEQ | IDDD |
| --- | --- | --- | --- | --- | --- | --- | --- | --- | --- | --- | --- | --- | --- | --- | --- | --- | --- | --- | --- | --- | --- | --- | --- | --- | --- | --- | --- | --- | --- | --- | --- | --- | --- | --- | --- | --- | --- | --- | --- | --- |
|  | 10 | **Precommissioning Tesing & snagging (Artrium / Corridor (6~8 th floor))** |  | 2012-10-06 | 2012-12-31 |  |  |  |  |  |  |  |  |  |  |  |  |  |  |  |  |  |  |  |  |  |  |  |  |  |  |  |  |  |  |  |  |  |  |  |
| S06TS01805C0 |  | SW-06 ; MEP de-snag, FIREM sign-off | 12d | 2012-10-06 | 2012-10-20 | S06AC26015C0, S06AC21113C0, S06AC23019C0, S06AC26017C0, S06AC26003C0, S06AC27030C0, S06AC26019C0, S06AC09503C0 |  |  |  |  | 58.7d | 0d | TESTING & COMMISSIONING [510 h]; Cost | S06TS01801C0 | SW | C | 06 | TS | SC | 018 | 01 | BILL 9 | B09 | S2 | 01 | R00 | ACF07 | 018 |  |  |  |  |  |  |  |  |  |  |  |  |
| S06TS01802C30 |  | SW-06 ; Touch-up & Clean / JV inspection /CIR /De-snag | 18d | 2012-10-20 | 2012-11-12 | S06AC08709C0, S06AC09601C0, S06AC09701C0, S06AC11001C0, S06AC11003C0, S06TS01805C0, S06AC05501C0 |  |  |  |  | 58.7d | 33d | TESTING & COMMISSIONING [128 h]; Cost | S06TS01802C0 | SW | C | 06 | TS | SC | 018 | 02 | BILL 9 | B09 | S2 | 02 | R00 | ACF07 | 018 |  |  |  |  |  |  |  |  |  |  |  |  |
| S06TS01809C0 |  | SW-06 ; Consultant's final de-snag inspection | 7d | 2012-12-23 | 2012-12-31 | S06TS01802C30, S06TS01806C0 |  |  |  |  | 25.7d | 0d | Labor General [1 h]; Cost | S06TS01803C0 | SW | C | 06 | TS | SC | 018 | 03 | BILL 9 | B09 | S2 | 03 | R00 | ACF07 | 018 |  |  |  |  |  |  |  |  |  |  |  |  |
|  | 06 | **TR Room** |  | 2011-07-05 | 2012-09-10 |  |  |  |  |  |  |  |  |  |  |  |  |  |  |  |  |  |  |  |  |  |  |  |  |  |  |  |  |  |  |  |  |  |  |  |
| S06TR09201C0 |  | SW-06 ; Metal Studs (TR RM) | 45d | 2011-07-05 A | 2011-10-16 | S06AC09201C0 SS | 70% | 13.5d | 2011-08-10 | 2011-10-03 | 56.62d | 0d | PARTITIONS [260 h]; PARTITIONS - Metal Studs [25 m]; Cost | S06TR09201C0 | SW | C | 06 | TR | PT | 092 | 01 | BILL 9 | B09 | S2 | 1F | R00 | ACF06 | 092 | 313 | 885 | 70 | 60 | GP | PMS |  |  |  |  |  |  |
| S06TR09203C0 |  | SW-06 ; Partitions 1st face (TR RM) | 45d | 2011-07-05 A | 2011-11-14 | S06TR09201C0 | 50% | 22.5d | 2011-08-24 | 2011-10-17 | 76d | 54.75d | PARTITIONS [25 m]; PARTITIONS [210 h]; Cost | S06TR09203C0 | SW | C | 06 | TR | PT | 092 | 03 | BILL 9 | B09 | S2 | 2F | R00 | ACF06 | 092 | 314 | 886 | 50 | 20 | GP | P1F |  |  |  |  |  |  |
| S06TR26026C0 |  | SW-06 ; 2nd Fix, Conduit (TR RM) | 30d | 2011-10-16 | 2011-11-23 | S06TR09201C0 |  |  |  |  | 56.62d | 0d | ELECTRICAL [447.6 h]; Cost | S06TR26026C0 | SW | C | 06 | TR | ME | 260 | 26 | BILL 9 | B09 | S2 | 2F | R00 | ACF07 | 260 |  |  |  |  | MEP |  | 30 | 2n |  |  |  |  |
| S06TR08101C0 |  | SW-06 ; Door Frames (TR RM) | 18d | 2011-11-01 | 2011-11-24 | S06TR09201C0, GNHE08101C0 FS+69d |  |  |  |  | 91d | 69.75d | ASSORTED DOORS [11 h]; Cost | S06TR08101C0 | SW | C | 06 | TR | DO | 081 | 01 | BILL 9 | B09 | S2 | DF | R00 | ACF06 | 081 | 316 | 20001090 |  |  |  |  |  |  | 08 |  |  |  |
| S06TR01005C0 |  | SW-06 ; 2nd, Wall Inspection by Consultant (TR RM) | 11.88d | 2011-11-23 | 2011-12-10 | S06TR26026C0 |  |  |  |  | 56.62d | 35.38d | Labor General [0.6 h]; Cost | S06TR01005C0 | SW | C | 06 | TR | ME | 010 | 05 | BILL 9 | B09 | S2 | WI | R00 | ACF07 | 010 |  |  |  |  | MEP |  |  | 2n |  |  |  |  |
| S06TR09205C0 |  | SW-06 ; Partitions Closing (TR RM) | 24d | 2012-01-21 | 2012-02-19 | S06TR01005C0, S06TR09201C0, S06TR09203C0, SAFOA09212C1 FF, S05TR09205C0 SS+6d, S06TR08101C0 FF, S06PA09205C0 SS |  |  |  |  | 21.25d | 0d | PARTITIONS [25 m]; PARTITIONS [253 h]; Cost | S06TR09205C0 | SW | C | 06 | TR | PT | 092 | 05 | BILL 9 | B09 | S2 | FF | R00 | ACF06 | 092 | 315 | 887 |  |  | GP | P2F |  |  |  |  |  |  |
| S06TR09901C0 |  | SW-06 ; Wall Prime & 1st coat (TR RM) | 18d | 2012-02-19 | 2012-03-11 | S06TR09205C0 |  |  |  |  | 25.25d | 0d | WALL PAINT [55 h]; WALL PAINT [68 m2]; Cost | S06TR09901C0 | SW | C | 06 | TR | PA | 099 | 01 | BILL 9 | B09 | S2 | 01 | R00 | ACF06 | 099 | 360 | 20001110 |  |  |  |  |  |  |  |  |  |  |
| S06TR23009C0 |  | SW-06 ; 2nd Fix, Inst of VAV'S CHW connection (TR RM) | 30d | 2012-02-19 | 2012-03-25 | S06TR09205C0 |  |  |  |  | 21.25d | 0d | MECHANICAL [1282.8 h]; Cost | S06TR23009C0 | SW | C | 06 | TR | ME | 230 | 09 | BILL 9 | B09 | S2 | 2F | R00 | ACF07 | 230 |  |  |  |  | MEP |  | 20 | 2n |  | 0 |  |  |
| S06TR23011C0 |  | SW-06 ; 2nd Fix, Inst of VCD's/FD's (TR RM) | 30d | 2012-02-19 | 2012-03-25 | S06TR09205C0 |  |  |  |  | 21.25d | 0d | MECHANICAL [1375.2 h]; Cost | S06TR23011C0 | SW | C | 06 | TR | ME | 230 | 11 | BILL 9 | B09 | S2 | 2F | R00 | ACF07 | 230 |  |  |  |  | MEP |  | 30 | 2n |  |  |  |  |
| S06TR26005C0 |  | SW-06 ; 2nd Fix, Wiring for Power/Lighting/Emergency (TR RM) | 30d | 2012-02-19 | 2012-03-25 | S06TR09205C0, S06TR26026C0 |  |  |  |  | 69.25d | 48d | ELECTRICAL [241.2 h]; Cost | S06TR26005C0 | SW | C | 06 | TR | ME | 260 | 05 | BILL 9 | B09 | S2 | 2F | R00 | ACF07 | 260 |  |  |  |  | MEP |  | 40 | 2n |  |  |  |  |
| S06TR26007C0 |  | SW-06 ; 2nd Fix, Cable Pulling (TR RM) | 30d | 2012-02-19 | 2012-03-25 | S06TR09203C0, S06TR09205C0 |  |  |  |  | 57.25d | 36d | ELECTRICAL [1532.4 h]; Cost | S06TR26007C0 | SW | C | 06 | TR | ME | 260 | 07 | BILL 9 | B09 | S2 | 2F | R00 | ACF07 | 260 |  |  |  |  | MEP |  |  | 2n |  |  |  |  |
| S06TR26009C0 |  | SW-06 ; 2nd Fix, Inst of Equipment (DB, TR, SG,BUS) (TR RM) | 54d | 2012-02-19 | 2012-04-22 | S06TR09205C0 |  |  |  |  | 67.25d | 40d | ELECTRICAL [3362.4 h]; Cost | S06TR26009C0 | SW | C | 06 | TR | ME | 260 | 09 | BILL 9 | B09 | S2 | 2F | R00 | ACF04 | 260 |  |  |  |  | MEP |  | 30 | 2n |  |  | E |  |
| S06TR26027C0 |  | SW-06 ; 2nd Fix, Wiring / Cabling (TR RM) | 30d | 2012-02-19 | 2012-03-25 | S06TR09203C0, S06TR09205C0 |  |  |  |  | 69.25d | 48d | ELECTRICAL [241.2 h]; Cost | S06TR26027C0 | SW | C | 06 | TR | ME | 260 | 27 | BILL 9 | B09 | S2 | 2F | R00 | ACF07 | 260 | 417 | 1318 |  |  | MEP |  | 30 | 2n |  |  |  |  |
| S06TR09501C0 |  | SW-06 ; Ceiling Grid and Service Tile (TR RM) | 24d | 2012-03-11 | 2012-04-08 | S06TR09205C0 SS+15d, S06TR09901C0 |  |  |  |  | 25.25d | 0d | CEILING GRID FOR GYPSUM [53.57 h]; CEILING GRID FOR GYPSUM [4.49 m2]; Cost | S06TR09501C0 | SW | C | 06 | TR | CE | 095 | 01 | BILL 9 | B09 | S2 | 01 | R00 | ACF06 | 095 | 336 | 1327 |  |  |  |  |  |  |  |  |  | 1 |
| S06TR09903C0 |  | SW-06 ; Wall - Final Paint (TR RM) | 12d | 2012-03-11 | 2012-03-25 | S06TR09901C0 |  |  |  |  | 127.25d | 106d | WALL PAINT [31 h]; WALL PAINT [37 m2]; Cost | S06TR09903C0 | SW | C | 06 | TR | PA | 099 | 03 | BILL 9 | B09 | S2 | 02 | R00 | ACF06 | 099 | 361 | 1312 |  |  |  |  |  |  |  |  |  |  |
| S06TR27020C0 |  | SW-06 ; 2nd Fix, Inst of ELV Equipment (Panels) (TR RM) | 48d | 2012-03-11 | 2012-05-06 | S06TR09205C0, S06TR09501C0 SS |  |  |  |  | 37.25d | 0d | ELECTRICAL [1868.4 h]; Cost | S06TR27020C0 | SW | C | 06 | TR | ME | 270 | 20 | BILL 9 | B09 | S2 | 2F | R00 | ACF04 | 270 |  |  |  |  | MEP |  |  | 2n |  |  | E |  |
| S06TR23013C0 |  | SW-06 ; 2nd Fix, Insulation of CHW pipe & Duct (TR RM) | 36d | 2012-03-25 | 2012-05-06 | S06TR23009C0, S06TR23011C0 |  |  |  |  | 21.25d | 0d | MECHANICAL [3980.4 h]; Cost | S06TR23013C0 | SW | C | 06 | TR | ME | 230 | 13 | BILL 9 | B09 | S2 | 2F | R00 | ACF07 | 230 |  |  |  |  | MEP |  |  | 2n |  |  |  |  |
| S06TR09601C0 |  | SW-06 ; Floor Finishes (TR RM) | 18d | 2012-04-08 | 2012-04-29 | S06TR09501C0 |  |  |  |  | 25.25d | 0d | ASSORTED FLOOR FINISH [992 h]; ASSORTED FLOOR FINISH [548 m2]; Cost | S06TR09601C0 | SW | C | 06 | TR | FF | 096 | 01 | BILL 9 | B09 | S2 | 01 | R00 | ACF06 | FF | 359 | 20001120 |  |  |  |  |  |  |  |  |  |  |
| S06TR23023C0 |  | SW-06 ; 2nd Fix, Flexible ducts (TR RM) | 30d | 2012-04-08 | 2012-05-13 | S06TR09205C0, S06TR09501C0 |  |  |  |  | 27.25d | 6d | MECHANICAL [430.8 h]; Cost | S06TR23023C0 | SW | C | 06 | TR | ME | 230 | 23 | BILL 9 | B09 | S2 | 2F | R00 | ACF07 | 230 | 412 | 20001140 |  |  | MEP |  |  | 2n |  |  |  |  |
| S06TR08105C0 |  | SW-06 ; Doors (TR RM) | 18d | 2012-04-29 | 2012-05-20 | S06TR08101C0, S06TR09901C0, S06TR09601C0 |  |  |  |  | 65.25d | 0d | ASSORTED DOORS [20 h]; ASSORTED DOORS [2 no]; Cost | S06TR08105C0 | SW | C | 06 | TR | DO | 081 | 05 | BILL 9 | B09 | S2 | DR | R00 | ACF06 | 081 | 317 | 1325 |  |  |  |  |  |  | 08 |  |  |  |
| S06TR21115C0 |  | SW-06 ; 2nd Fix, Gaseous Fire Suppression (TR RM) | 30d | 2012-04-29 | 2012-06-03 | S06TR09601C0 |  |  |  |  | 25.25d | 4d | MECHANICAL [3496.8 h]; Cost | S06TR21115C0 | SW | C | 06 | TR | ME | 211 | 15 | BILL 9 | B09 | S2 | 2F | R00 | ACF07 | 211 | 411 | 20001130 |  |  | MEP |  |  | 2n |  |  |  |  |
| S06TR01006C0 |  | SW-06 ; 2nd, Ceiling Inspection by Consultants (TR RM) | 12d | 2012-05-06 | 2012-05-20 | S06TR23009C0, S06TR23011C0, S06TR23013C0, S06TR26007C0, S06TR09501C0 |  |  |  |  | 21.25d | 0d | Labor General [0.6 h]; Cost | S06TR01006C0 | SW | C | 06 | TR | ME | 010 | 06 | BILL 9 | B09 | S2 | CI | R00 | ACF07 | 010 |  |  |  |  | MEP |  |  | 2n |  |  |  |  |
| S06TR27002C0 |  | SW-06 ; 2nd Fix, Dressing of ELV panels (TR RM) | 18d | 2012-05-06 | 2012-05-27 | S06TR09205C0, S06TR27020C0 |  |  |  |  | 37.25d | 10d | ELECTRICAL [1946.4 h]; Cost | S06TR27002C0 | SW | C | 06 | TR | ME | 270 | 02 | BILL 9 | B09 | S2 | 2F | R00 | ACF07 | 270 |  |  |  |  | MEP |  |  | 2n |  |  |  |  |
| S06TR08709C0 |  | SW-06 ; Ironmongery (TR RM) | 14d | 2012-05-20 | 2012-06-05 | S06TR08105C0 |  |  |  |  | 65.25d | 44d | IRONMONGERY [30 h]; IRONMONGERY [3 no]; Cost | S06TR08709C0 | SW | C | 06 | TR | DO | 087 | 09 | BILL 9 | B09 | S2 | IM | R00 | ACF06 | 087 | 322 | 20001100 |  |  |  |  |  |  | 08 |  |  |  |
| S06TR09503C0 |  | SW-06 ; Ceiling closure (TR RM) | 16d | 2012-05-20 | 2012-06-07 | S06TR01006C0, S06TR21115C0 FF, S06TR26005C0, S06TR26007C0, S06TR26026C0, S06TR26027C0, S06TR23023C0 |  |  |  |  | 21.25d | 0d | ASSORTED CEILING FINISH [49.2 h]; CEILING GYPSUM [1.44 h]; ASSORTED CEILING FINISH [80 m2]; CEILING GYPSUM [4 m2]; Cost | S06TR09503C0 | SW | C | 06 | TR | CE | 095 | 03 | BILL 9 | B09 | S2 | 02 | R00 | ACF06 | 095 | 337 | 20001080 |  |  |  |  |  |  |  |  |  |  |
| S06TR09905C0 |  | SW-06 ; Ceiling Prime & 1st coat (TR RM) | 18d | 2012-06-07 | 2012-06-30 | S06TR09503C0 |  |  |  |  | 33.25d | 0d | CEILING PAINT [4 h]; CEILING PAINT [4 m2]; Cost | S06TR09905C0 | SW | C | 06 | TR | PA | 099 | 05 | BILL 9 | B09 | S2 | 01 | R00 | ACF06 | 099 | 362 | 1313 |  |  |  |  |  |  |  |  |  |  |
| S06TR23003C0 |  | SW-06 ; Final Fix, Inst of Grilles & Diffusers (TR RM) | 18d | 2012-06-07 | 2012-06-30 | S06TR09503C0 |  |  |  |  | 27.25d | 6d | MECHANICAL [835.2 h]; Cost | S06TR23003C0 | SW | C | 06 | TR | ME | 230 | 03 | BILL 9 | B09 | S2 | FF | R00 | ACF07 | 230 |  |  |  |  | MEP |  |  | FF |  |  |  |  |
| S06TR23074C0 |  | SW-06 ; Final Fix, Grilles, panels & diffusers (TR RM) | 18d | 2012-06-07 | 2012-06-30 | S06TR09503C0 |  |  |  |  | 27.25d | 6d | MECHANICAL [835.2 h]; Cost | S06TR23074C0 | SW | C | 06 | TR | ME | 230 | 74 | BILL 9 | B09 | S2 | FF | R00 | ACF07 | 230 | 419 | 20001160 |  |  | MEP |  |  | FF |  |  |  |  |
| S06TR26013C0 |  | SW-06 ; Final Fix, Termination & Gladding of Cables (TR RM) | 18d | 2012-06-07 | 2012-06-30 | S06TR09503C0, S06TR26009C0 |  |  |  |  | 27.25d | 6d | ELECTRICAL [85.2 h]; Cost | S06TR26013C0 | SW | C | 06 | TR | ME | 260 | 13 | BILL 9 | B09 | S2 | FF | R00 | ACF07 | 260 |  |  |  |  | MEP |  |  | FF |  |  |  |  |
| S06TR26015C0 |  | SW-06 ; Final Fix, Inst of Ceiling rose (TR RM) | 18d | 2012-06-07 | 2012-06-30 | S06TR09503C0 |  |  |  |  | 27.25d | 6d | ELECTRICAL [36 h]; Cost | S06TR26015C0 | SW | C | 06 | TR | ME | 260 | 15 | BILL 9 | B09 | S2 | FF | R00 | ACF07 | 260 |  |  |  |  | MEP |  |  | FF |  |  |  |  |
| S06TR26017C0 |  | SW-06 ; Final Fix, Inst of Switch/Sockets (TR RM) | 12d | 2012-06-07 | 2012-06-23 | S06TR09901C0, S06TR09503C0 |  |  |  |  | 33.25d | 12d | ELECTRICAL [256.8 h]; Cost | S06TR26017C0 | SW | C | 06 | TR | ME | 260 | 17 | BILL 9 | B09 | S2 | FF | R00 | ACF07 | 260 |  |  |  |  | MEP |  |  | FF |  |  |  |  |
| S06TR26019C0 |  | SW-06 ; Final Fix, Inst of Light fittings (TR RM) | 24d | 2012-06-07 | 2012-07-07 | S06TR09503C0 |  |  |  |  | 21.25d | 0d | ELECTRICAL [4813.2 h]; Cost | S06TR26019C0 | SW | C | 06 | TR | ME | 260 | 19 | BILL 9 | B09 | S2 | FF | R00 | ACF07 | 260 |  |  |  |  | MEP |  |  | FF |  |  |  |  |
| S06TR26076C0 |  | SW-06 ; Final Fix, Lighting fittings (TR RM) | 24d | 2012-06-07 | 2012-07-07 | S06TR09503C0 |  |  |  |  | 21.25d | 0d | ELECTRICAL [4813.2 h]; Cost | S06TR26076C0 | SW | C | 06 | TR | ME | 260 | 76 | BILL 9 | B09 | S2 | FF | R00 | ACF07 | 260 | 420 | 20001170 |  |  | MEP |  |  | FF |  |  |  |  |
| S06TR27030C0 |  | SW-06 ; Final Fix, Inst of ELV devise (Detector/Speaker) (TR RM) | 18d | 2012-06-07 | 2012-06-30 | S06TR09503C0, S06TR27002C0 |  |  |  |  | 27.25d | 6d | ELECTRICAL [1348.8 h]; Cost | S06TR27030C0 | SW | C | 06 | TR | ME | 270 | 30 | BILL 9 | B09 | S2 | FF | R00 | ACF07 | 270 |  |  |  |  | MEP |  |  | FF |  |  |  |  |
| S06TR09907C0 |  | SW-06 ; Ceiling - Final paint (TR RM) | 12d | 2012-06-30 | 2012-07-14 | S06TR09905C0 |  |  |  |  | 33.25d | 12d | CEILING PAINT [2 h]; CEILING PAINT [2 m2]; Cost | S06TR09907C0 | SW | C | 06 | TR | PA | 099 | 07 | BILL 9 | B09 | S2 | 02 | R00 | ACF06 | 099 | 363 | 1314 |  |  |  |  |  |  |  |  |  |  |
| S06TR01802C0 |  | SW-06 ; MEP de-snag, FIREM sign-off | 18d | 2012-07-07 | 2012-07-28 | S06TR26017C0, S06TR23074C0, S06TR23003C0, S06TR26076C0, S06TR26013C0, S06TR26015C0, S06TR26019C0, S06TR27030C0 |  |  |  |  | 21.25d | 0d | TESTING & COMMISSIONING [510 h]; Cost | S05CO01851C0 | SW | C | 06 | TR | SC | 018 | 53 | BILL 9 | B09 | S2 | 01 | R00 | ACF07 | 018 |  |  |  |  |  |  |  |  |  |  |  |  |
| S06TR01801C0 |  | SW-06 ; Touch-up & Clean / JV inspection /CIR /De-snag | 24d | 2012-07-28 | 2012-08-27 | S06TR01802C0, S06TR08709C0, S06TR09601C0, S06TR09903C0, S06TR09907C0 |  |  |  |  | 21.25d | 0d | TESTING & COMMISSIONING [128 h]; Cost | S06TR01851C0 | SW | C | 06 | TR | SC | 018 | 51 | BILL 9 | B09 | S2 | 02 | R00 | ACF07 | 018 | 396 |  |  |  |  |  |  |  |  |  |  |  |
| S06TR01803C0 |  | SW-06 ; Consultant's final de-snag inspection | 12d | 2012-08-27 | 2012-09-10 | S06TR01801C0 |  |  |  |  | 21.25d | 12.75d | Labor General [1 h]; Cost | CP3TS01803C0 | SW | C | 06 | TR | SC | 018 | 03 | BILL 9 | B09 | S1 | 03 | R00 | ACF07 | 018 |  |  |  |  |  |  |  |  |  |  |  |  |

| ID | WBS | Activity | Type | Duration | Start | Finish | Predecessors | Complete | Remaining | Planned start | Planned finish | Total float | Free float | Resources | change id | RENZ % COMPLETE | CCAD BUILDING(SET) | CCAD PHASE(SET) | CCAD FLOOR(SET) | CCAD ZONE(SET) | CCAD WORK(SET) | CCAD SECTION(SET) | CCAD SERIAL No.(SET) | CCAD CBS(SET) | CCAD BILL(SET) | CCAD HANDOVER(SET) | CCAD TAG(SET) | CCAD REV(SET) | CCADACF (SET) | CCAD SSCF | Actual Cost | Phase | Area/ Department | Grids | Are | Weight & Nos | Process | Levels | CCAD CSA | Claimed This Month | P_811 | P_711 | user_number8 | user_integer1 | user_integer2 | user_number7 | U% |
| --- | --- | --- | --- | --- | --- | --- | --- | --- | --- | --- | --- | --- | --- | --- | --- | --- | --- | --- | --- | --- | --- | --- | --- | --- | --- | --- | --- | --- | --- | --- | --- | --- | --- | --- | --- | --- | --- | --- | --- | --- | --- | --- | --- | --- | --- | --- | --- |
|  | 07 | **Level 7** |  |  | 2010-11-14 | 2013-01-10 |  |  |  |  |  |  |  |  |  |  |  |  |  |  |  |  |  |  |  |  |  |  |  |  |  |  |  |  |  |  |  |  |  |  |  |  |  |  |  |  |  |
|  | 01 | **Structure & Envelopment** |  |  | 2010-11-14 | 2012-08-05 |  |  |  |  |  |  |  |  |  |  |  |  |  |  |  |  |  |  |  |  |  |  |  |  |  |  |  |  |  |  |  |  |  |  |  |  |  |  |  |  |  |
| S07SA03307C0 |  | SW-07 ; Corewall Concrete (Zone SA) |  | 4d | 2010-11-14 A | 2010-11-14 A | S06SA03307C0 | 100% |  | 2011-01-09 | 2011-01-12 |  |  | CONCRETE [6688 h]; CONCRETE [168 m3]; Cost | S07SA03307C0 | 100 | SW | C | 07 | SA | CT | 033 | 07 | BILL 9 | B09 | S2 | 04 | R00 | ACF03 | 033 |  |  |  |  |  |  |  |  |  |  |  |  |  |  |  |  |  |
| S07SC03305C0 |  | SW-07 ; Corewall Concrete (Zone SC) |  | 6d | 2010-12-01 A | 2010-12-01 A | S06SC03305C0 | 100% |  | 2011-01-16 | 2011-01-22 |  |  | CONCRETE [6688 h]; CONCRETE [168 m3]; Cost | S07SC03305C0 | 100 | SW | C | 07 | SC | CT | 033 | 05 | BILL 9 | B09 | S2 | 04 | R00 | ACF03 | 033 |  |  |  |  |  |  |  |  |  |  |  |  |  |  |  |  |  |
| S07S105101C0 |  | SW-07 ; Erection of Structural Steel of 7th Floor (Zone S1) |  | 5d | 2011-01-08 A | 2011-02-24 A | S06S105103C0, S07SA03307C0 | 100% |  | 2011-01-12 | 2011-01-18 |  |  | STRUCTURAL STEEL [8195 h]; STRUCTURAL STEEL [276 T(Fe)]; Cost | S07S105101C0 | 100 | SW | C | 07 | S1 | ST | 051 | 01 | BILL 9 | B09 | S2 | 01 | R00 | ACF03 | 051 | 1756740.91 | Z2 | SW | 5TH | C | A8B | EREC | 6FLR | ST |  |  |  |  |  |  |  |  |
| S07S105103C0 |  | SW-07 ; Alignment & welding of 7th Floor (Zone S1) |  | 5d | 2011-01-14 A | 2011-04-17 A | S07S105101C0 | 100% |  | 2011-01-18 | 2011-01-24 |  |  | STRUCTURAL STEEL [468 h]; Cost | S07S105103C0 | 100 | SW | C | 07 | S1 | ST | 051 | 03 | BILL 9 | B09 | S2 | 02 | R00 | ACF03 | 051 |  | Z2 | SW | 5TH | C | A8B | EREC | 6FLR | ST |  |  |  |  |  |  |  |  |
| S07S205101C0 |  | SW-07 ; Erection of Structural Steel of 7th Floor (Zone S2) |  | 12.03d | 2011-02-19 A | 2011-06-28 A | S06S205103C0, S07SC03305C0 | 100% |  | 2011-03-20 | 2011-04-03 |  |  | STRUCTURAL STEEL [16065 h]; STRUCTURAL STEEL [540 T(Fe)]; Cost | S07S205101C0 | 95 | SW | C | 07 | S2 | ST | 051 | 01 | BILL 9 | B09 | S2 | 01 | R00 | ACF03 | 051 |  | Z2 | SW | 5TH | C | A8B | EREC | 6FLR | ST | 108307.21 |  |  |  |  |  |  |  |
| S07S305101C0 |  | SW-07 ; Erection of Structural Steel of 7th Floor (Zone S3) |  | 8d | 2011-02-26 A | 2011-06-21 A | S06S305103C0 | 100% |  | 2011-03-12 | 2011-03-21 |  |  | STRUCTURAL STEEL [5272 h]; STRUCTURAL STEEL [177 T(Fe)]; Cost | S07S305101C0 | 95 | SW | C | 07 | S3 | ST | 051 | 01 | BILL 9 | B09 | S2 | 01 | R00 | ACF03 | 051 |  | Z2 | SW | 5TH | C | A8B | EREC | 6FLR | ST | 209317.23 |  |  |  |  |  |  |  |
| S07S305103C0 |  | SW-07 ; Alignment & welding of 7th Floor (Zone S3) |  | 7d | 2011-03-05 A | 2011-06-29 A | S07S305101C0 | 100% |  | 2011-03-16 | 2011-03-24 |  |  | STRUCTURAL STEEL [1147 h]; Cost | S07S305103C0 | 95 | SW | C | 07 | S3 | ST | 051 | 03 | BILL 9 | B09 | S2 | 02 | R00 | ACF03 | 051 |  | Z2 | SW | 5TH | C | A8B | EREC | 6FLR | ST | 23218.27 |  |  |  |  |  |  |  |
| S07S205103C0 |  | SW-07 ; Alignment & welding of 7th Floor (Zone S2) |  | 8d | 2011-03-10 A | 2011-06-28 A | S07S205101C0 | 100% |  | 2011-04-06 | 2011-04-16 |  |  | STRUCTURAL STEEL [475 h]; Cost | S07S205103C0 | 95 | SW | C | 07 | S2 | ST | 051 | 03 | BILL 9 | B09 | S2 | 02 | R00 | ACF03 | 051 |  | Z2 | SW | 5TH | C | A8B | EREC | 6FLR | ST | 12033.82 |  |  |  |  |  |  |  |
| S07S305305C0 |  | SW-07 ; Metal Decking Lvl - 7 (Zone S3) |  | 22d | 2011-04-05 A | 2011-06-29 A | S07S305103C0, S08S305101C0 | 100% |  | 2011-03-26 | 2011-04-20 |  |  | METAL DECKING [5874 h]; METAL DECKING [3504 m2]; Cost | S07S305305C0 | 95 | SW | C | 07 | S3 | ST | 053 | 05 | BILL 9 | B09 | S2 | 03 | R00 | ACF03 | 053 |  | Z2 | SW | 5TH | C | A8B | MDEC | 6FLR | ST | 17820.99 |  |  |  |  |  |  |  |
| S07S105305C0 |  | SW-07 ; Metal Decking Lvl - 7 (Zone S1) |  | 15d | 2011-04-06 A | 2011-04-19 A | S07S105103C0, S08S105101C0 | 100% |  | 2011-03-03 | 2011-03-21 |  |  | METAL DECKING [2400 h]; METAL DECKING [1432 m2]; Cost | S07S105305C0 | 100 | SW | C | 07 | S1 | ST | 053 | 05 | BILL 9 | B09 | S2 | 03 | R00 | ACF03 | 053 |  | Z2 | SW | 5TH | C | A8B | MDEC | 6FLR | ST |  |  |  |  |  |  |  |  |
| S07S103399C0 |  | SW-07 ; Concrete on Metal Decking Lvl - 7 (Zone S1) |  | 10d | 2011-04-19 A | 2011-04-24 A | S07S105305C0 | 100% |  | 2011-03-21 | 2011-04-02 |  |  | CONCRETE [5568 h]; CONCRETE [140 m3]; Cost | S07S105335C0 | 100 | SW | C | 07 | S1 | CT | 033 | 99 | BILL 9 | B09 | S2 | 08 | R00 | ACF03 | 033 |  | Z2 | SW | 5TH | C | A8B | MDEC | 6FLR |  |  |  |  |  |  |  |  |  |
| S07S303399C0 |  | SW-07 ; Concrete on Metal Decking Lvl - 7 (Zone S3) |  | 10d | 2011-04-20 A | 2011-06-29 A | S07S305305C0 | 100% |  | 2011-04-20 | 2011-05-02 |  |  | CONCRETE [13752 h]; CONCRETE [346 m3]; Cost | S07S305335C0 | 80 | SW | C | 07 | S3 | CT | 033 | 99 | BILL 9 | B09 | S2 | 08 | R00 | ACF03 | 033 |  | Z2 | SW | 5TH | C | A8B | MDEC | 6FLR |  | 84132.71 |  |  |  |  |  |  |  |
| S07S107807C0 |  | SW-07 ; Cementitious Fire Proofing Lvl - 7 (Zone S1) |  | 9d | 2011-05-15 A | 2011-05-30 A | BLZHC01569C0, S08S103399C0 | 100% |  | 2011-06-18 | 2011-06-27 |  |  | CEMENTITIOUS FIREPROOFING [603 h]; CEMENTITIOUS FIREPROOFING [1205 m2]; Cost | S07S107807C0 | 100 | SW | C | 07 | S1 | ST | 078 | 07 | BILL 9 | B09 | S2 | 04 | R00 | ACF03 | 078 |  | Z2 | SW | 5TH | C | A8B | FIRE | 6FLR | ST |  |  |  |  |  |  |  |  |
| S07S203399C0 |  | SW-07 ; Concrete on Metal Decking Lvl - 7 (Zone S2) |  | 10.08d | 2011-05-15 A | 2011-07-31 A | S07S205305C0 | 100% |  | 2011-06-30 | 2011-07-12 |  |  | CONCRETE [8272 h]; CONCRETE [208 m3]; Cost | S07S205335C0 | 95 | SW | C | 07 | S2 | CT | 033 | 99 | BILL 9 | B09 | S2 | 08 | R00 | ACF03 | 033 |  | Z2 | SW | 5TH | C | A8B | MDEC | 6FLR |  | 10901.58 |  |  |  |  |  |  |  |
| S07S205305C0 |  | SW-07 ; Metal Decking Lvl - 7 (Zone S2) |  | 19d | 2011-05-15 A | 2011-06-30 A | S07S205103C0, S08S205101C0 | 100% |  | 2011-06-06 | 2011-06-29 |  |  | METAL DECKING [3045 h]; METAL DECKING [1816 m2]; Cost | S07S205305C0 | 98 | SW | C | 07 | S2 | ST | 053 | 05 | BILL 9 | B09 | S2 | 03 | R00 | ACF03 | 053 |  | Z2 | SW | 5TH | C | A8B | MDEC | 6FLR | ST | 3694.64 |  |  |  |  |  |  |  |
| S07S207807C0 |  | SW-07 ; Cementitious Fire Proofing Lvl - 7 (Zone S2) |  | 10.08d | 2011-05-15 A | 2011-06-30 A | S08S203399C0 | 100% |  | 2011-07-14 | 2011-07-26 |  |  | CEMENTITIOUS FIREPROOFING [764 h]; CEMENTITIOUS FIREPROOFING [1528 m2]; Cost | S07S207807C0 | 95 | SW | C | 07 | S2 | ST | 078 | 07 | BILL 9 | B09 | S2 | 04 | R00 | ACF03 | 078 |  | Z2 | SW | 5TH | C | A8B | FIRE | 6FLR | ST | 10401.31 |  |  |  |  |  |  |  |
| S07S307807C0 |  | SW-07 ; Cementitious Fire Proofing Lvl - 7 (Zone S3) |  | 10d | 2011-05-15 A | 2011-06-30 A | S08S303399C0 | 100% |  | 2011-06-29 | 2011-07-11 |  |  | CEMENTITIOUS FIREPROOFING [1475 h]; CEMENTITIOUS FIREPROOFING [2949 m2]; Cost | S07S307807C0 | 60 | SW | C | 07 | S3 | ST | 078 | 07 | BILL 9 | B09 | S2 | 04 | R00 | ACF03 | 078 |  | Z2 | SW | 5TH | C | A8B | FIRE | 6FLR | ST | 160543.71 |  |  |  |  |  |  |  |
| S07GN03003C0 |  | SW-AF ; Temporary Enclosure | level of effort | 42d | 2011-06-08 A | 2011-08-30 A | S07PA09203C0 SS, S07F109203C0 SS, S07AL09203C0 SS, S07TR09203C0 SS | 100% |  | 2011-08-17 | 2011-10-08 |  |  | Labor General [0.6 h]; Cost |  |  | SW | C | 07 | GEN | FA | GEN |  |  | B09 |  | TE | R00 | ACF05 | 010 |  |  |  |  |  |  |  |  | FA |  | 100 | 0 |  |  |  |  |  |
| S07CO04403C0 |  | SW-07 ; C2 Bracket (Common Zone) |  | 96d | 2011-07-10 A | 2011-10-23 | S07S107807C0, S07S207807C0 FF, S07S307807C0 | 80% | 19.2d | 2011-07-09 | 2011-10-30 | 48.58d | 0d | FACADE CURTAIN WALL 2 [958.6 h]; Cost | S07CO04403C0 |  | SW | C | 07 | CO | FA | 044 | 03 | BILL 9 | B09 | S2 | FC2 | R00 | ACF05 | 044 |  |  |  |  |  |  |  |  | FA |  | 60 | 20 | 0 | 0 | 0 | 0 | 70 |
| S07CO04405C0 |  | SW-07 ; C2 Transom & Mullion (Common Zone) |  | 96d | 2011-08-10 A | 2011-10-30 | S07CO04403C0 SS | 73% | 25.92d | 2011-09-04 | 2011-12-31 | 48.58d | 0d | FACADE CURTAIN WALL 2 [3833.7 h]; Cost | S07CO04405C0 |  | SW | C | 07 | CO | FA | 044 | 05 | BILL 9 | B09 | S2 | FC2 | R00 | ACF05 | 044 |  |  |  |  |  |  |  |  | FA |  | 35 | 0 | 0 | 0 | 0 | 0 | 73 |
| S07CO04406C0 |  | SW-07 ; C2 Glazing (Common Zone) |  | 96d | 2011-08-10 A | 2011-10-30 | S07CO04405C0 SS, S07GN03003C0 FF, S07CO04405C0 FF | 73% | 25.92d | 2011-09-04 | 2011-12-31 | 48.58d | 16.83d | FACADE CURTAIN WALL 2 [4083 h]; FACADE CURTAIN WALL 2 [870.92 m2]; FACADE TOTAL QUANTITY m2 [870.92 m2]; Cost | S07CO04406C0 |  | SW | C | 07 | CO | FA | 044 | 06 | BILL 9 | B09 | S2 | FC2 | R00 | ACF05 | 044 |  |  |  |  |  |  |  |  | FA |  | 35 | 0 | 0 | 0 | 0 | 0 | 73 |
| S07CO04415C0 |  | SW-07 ; SG Catwalk Installation (Common Zone) |  | 74d | 2011-10-30 | 2012-01-31 | SEXCO04403C0 SS, S06CO04415C0 SS |  |  |  |  | 167.08d | 0d | FACADE TOTAL QUANTITY m2 [404 m2]; FACADE CURTAIN WALL 5 [112 m2]; FACADE CURTAIN WALL 6 [292 m2]; Labor General [6485 h]; Cost | I05CO04411C0 |  | SW | C | 07 | CO | FA | 044 | 11 | BILL 9 | B09 | S2 | SG | R00 | ACF05 | 044 |  |  |  |  |  |  |  |  | FA |  |  |  |  |  |  |  |  |
| S07CO04425C0 |  | SW-07 ; SO Storefront System Installation (Common Zone) |  | 54d | 2012-06-03 | 2012-08-05 | S07CO04403C0 FF, S06CO04425C0 |  |  |  |  | 225d | 222.12d | PARTITIONS [1427 m]; Labor General [28041 h]; Cost | I05CO04411C0 |  | SW | C | 07 | CO | FA | 044 | 11 | BILL 9 | B09 | S2 | SO | R00 | ACF05 | 044 |  |  |  |  |  |  |  |  | FA |  |  |  |  |  |  |  |  |

| ID | WBS | Activity | Duration | Start | Finish | Predecessors | Complete | Remaining | Planned start | Planned finish | Total float | Free float | Resources | Cost | Actual cost | change id | July2011 Target% Complete | Claimed This Month | U% | CCAD BUILDING(SET) | CCAD PHASE(SET) | CCAD FLOOR(SET) | CCAD ZONE(SET) | CCAD WORK(SET) | CCAD SECTION(SET) | CCAD SERIAL No.(SET) | CCAD SUB ZONE MEP(SET) | CCAD CBS(SET) | CCAD BILL(SET) | CCAD HANDOVER(SET) | CCAD TAG(SET) | CCAD REV(SET) | CCADACF (SET) | CCAD CSA | CCAD SSCF | Act Selector % | user_number8 | user_integer1 | user_integer2 | user_number7 | Change Order # | NEW ACTIVITY ID | P_811 | P_711 | CCAD DIVISION(SET) | CCAD MEQ | R3 Finish |
| --- | --- | --- | --- | --- | --- | --- | --- | --- | --- | --- | --- | --- | --- | --- | --- | --- | --- | --- | --- | --- | --- | --- | --- | --- | --- | --- | --- | --- | --- | --- | --- | --- | --- | --- | --- | --- | --- | --- | --- | --- | --- | --- | --- | --- | --- | --- | --- |
|  | 02 | **Public Area ( Elev.Lobby & Corridors )** |  | 2011-06-07 | 2012-12-23 |  |  |  |  |  |  |  |  |  |  |  |  |  |  |  |  |  |  |  |  |  |  |  |  |  |  |  |  |  |  |  |  |  |  |  |  |  |  |  |  |  |  |
| S07PA23001C0 |  | SW-07 ; 1st Fix, Inst. of Supports for MEP (Public Area) | 42d | 2011-06-07 A | 2011-10-08 | S07S107807C0, S07S207807C0, S07S307807C0 | 85% | 6.3d | 2011-07-20 | 2011-09-10 | 48d | 0d | MECHANICAL [1808.4 h]; Cost [30275.7 AED] | 30,275.67 | 25,734.32 | S07PA23001C0 | 40 | 59125.58 | 85 | SW | C | 07 | PA | ME | 230 | 01 | 1S | BILL 9 | B09 | S2 | 1F | R00 | ACF04 | MEP | 230 | M1F |  |  |  |  |  |  |  |  |  |  |  |
| S07PA09203C0 |  | SW-07 ; Partitions early wall & 1st face (Public Area) | 75d | 2011-06-14 A | 2011-11-30 | S07PA09201C0 | 60% | 30d | 2011-08-17 | 2011-11-19 | 66d | 29.25d | PARTITIONS [519 m]; PARTITIONS [3852 h]; Cost |  |  | S07PA09203C0 |  | 19055.73 | 60 | SW | C | 07 | PA | PT | 092 | 03 |  | BILL 9 | B09 | S2 | 2F | R00 | ACF06 | GP | 092 | P1F | 0 | 0 | 0 | 0 | 314 | 945 | 60 | 30 |  |  |  |
| S07PA09201C0 |  | SW-07 ; Metal Studs (Public Area) | 75d | 2011-06-26 A | 2011-10-22 | S07PA23001C0 SS+12d | 75% | 18.75d | 2011-07-12 | 2011-10-10 | 48d | 0d | PARTITIONS [4937 h]; PARTITIONS - Metal Studs [519 m]; Cost |  |  | S07PA09201C0 |  |  | 75 | SW | C | 07 | PA | PT | 092 | 01 |  | BILL 9 | B09 | S2 | 1F | R00 | ACF06 | GP | 092 | PMS | 0 | 0 | 0 | 0 | 313 | 944 | 75 | 70 |  |  |  |
| S07PA21111C0 |  | SW-07 ; 1st Fix, Inst of Sprinkler main pipe (Public Area) | 66d | 2011-07-10 A | 2011-10-31 | S07PA23001C0 SS | 60% | 26.4d | 2011-10-10 | 2012-01-02 | 136.35d | 99.6d | MECHANICAL [1204.8 h]; Cost [43268 AED] | 43,267.97 | 25,960.78 | S07PA21111C0 | 75 |  | 40 | SW | C | 07 | PA | ME | 211 | 11 | 1S | BILL 9 | B09 | S2 | 1F | R00 | ACF04 | MEP | 211 | M1F | 0 | 0 | 0 | 0 |  |  | 30 | 20 |  |  |  |
| S07PA21117C0 |  | SW-07 ; 1st Fix, Inst of Sprinkler branch pipe (Public Area) | 66d | 2011-07-10 A | 2011-11-27 | S07PA09201C0 | 60% | 26.4d | 2011-11-29 | 2012-02-18 | 157.6d | 110.85d | MECHANICAL [682.8 h]; Cost [37306.8 AED] | 37,306.8 | 22,384.08 | S07PA21117C0 |  |  | 40 | SW | C | 07 | PA | ME | 211 | 17 | 1S | BILL 9 | B09 | S2 | 1F | R00 | ACF04 | MEP | 211 | M1F | 0 | 0 | 0 | 0 |  |  | 30 | 20 |  |  |  |
| S07PA22019C0 |  | SW-07 ; 1st Fix, Inst of Drainage pipe (ceiling) (Public Area) | 120d | 2011-07-10 A | 2011-10-20 | S07PA23001C0 SS | 85% | 18d | 2011-09-18 | 2012-02-13 | 76.95d | 6.3d | PLUMBING [310.8 h]; Cost [16770.4 AED] | 16,770.39 | 14,254.83 | S07PA22019C0 | 25 |  | 85 | SW | C | 07 | PA | ME | 220 | 19 | 1S | BILL 9 | B09 | S2 | 1F | R00 | ACF04 | MEP | 220 | M1F | 0 | 0 | 0 | 0 |  |  | 80 | 5 |  |  |  |
| S07PA23017C0 |  | SW-07 ; 1st Fix, Inst of CHW pipe (Public Area) | 60d | 2011-07-10 A | 2011-11-30 | S07PA23001C0 | 30% | 42d | 2011-10-26 | 2012-01-11 | 66.55d | 0d | MECHANICAL [1687.2 h]; Cost [92145.2 AED] | 92,145.18 | 27,643.55 | S07PA23017C0 |  |  |  | SW | C | 07 | PA | ME | 230 | 17 | 1S | BILL 9 | B09 | S2 | 1F | R00 | ACF04 | MEP | 230 | M1F | 0 | 0 | 0 | 0 |  |  |  |  |  |  |  |
| S07PA26013C0 |  | SW-07 ; 1st Fix, Inst of Cable Tray (Public Area) | 60d | 2011-07-10 A | 2011-11-03 | S07PA23001C0 SS, S07S107807C0, S07S207807C0, S07S307807C0 | 50% | 30d | 2011-09-01 | 2011-11-14 | 124.75d | 3d | ELECTRICAL [231.6 h]; Cost [13047.4 AED] | 13,047.37 | 6,523.68 | S07PA26013C0 | 40 |  | 50 | SW | C | 07 | PA | ME | 260 | 13 | 1S | BILL 9 | B09 | S2 | 1F | R00 | ACF04 | MEP | 260 | M1F | 0 | 0 | 0 | 0 |  |  |  |  |  |  |  |
| S07PA27010C0 |  | SW-07 ; 1st Fix, Inst of Trunking for ELV system (Public Area) | 66d | 2011-07-10 A | 2011-11-10 | S07PA23001C0 SS, S07S107807C0, S07S207807C0, S07S307807C0 | 50% | 33d | 2011-08-18 | 2011-11-09 | 121.75d | 0d | ELECTRICAL [991.2 h]; Cost [51056.8 AED] | 51,056.81 | 25,528.4 | S07PA27010C0 | 30 |  | 50 | SW | C | 07 | PA | ME | 270 | 10 | 1S | BILL 9 | B09 | S2 | 1F | R00 | ACF04 | MEP | 270 | M1F | 0 | 0 | 0 | 0 |  |  | 30 | 25 |  |  |  |
| S07PA23023C0 |  | SW-07 ; 1st Fix, Inst of Main Ducting (Public Area) | 63d | 2011-08-10 A | 2011-11-24 | S07PA23001C0 SS | 30% | 44.1d | 2011-10-04 | 2011-12-22 | 110.65d | 0d | MECHANICAL [6650.4 h]; Cost [363211 AED] | 363,210.66 | 108,963.2 | S07PA23023C0 |  |  | 30 | SW | C | 07 | PA | ME | 230 | 23 | 1S | BILL 9 | B09 | S2 | 1F | R00 | ACF04 | MEP | 230 | M1F | 0 | 0 | 0 | 0 |  |  | 10 | 0 |  |  |  |
| S07PA26001C0 |  | SW-07 ; 1st Fix, Inst of Trunking/Conduiting (Public Area) | 60d | 2011-08-10 A | 2011-11-03 | S07PA23001C0 SS, S07S107807C0, S07S207807C0, S07S307807C0 | 50% | 30d | 2011-09-04 | 2011-11-16 | 124.75d | 3d | ELECTRICAL [447.6 h]; Cost [24105.1 AED] | 24,105.11 | 12,052.55 | S07PA26001C0 | 30 |  | 50 | SW | C | 07 | PA | ME | 260 | 01 | 1S | BILL 9 | B09 | S2 | 1F | R00 | ACF04 | MEP | 260 | M1F | 0 | 0 | 0 | 0 |  |  | 25 | 0 |  |  |  |
| S07PA22005C0 |  | SW-07 ; 1st Fix, Inst of Water supply pipe (ceiling) (Public Area) | 54d | 2011-09-05 A | 2011-11-24 | S07PA22019C0 SS+7d, S07PA23001C0 | 30% | 37.8d | 2011-10-23 | 2011-12-31 | 70.65d | 33.9d | PLUMBING [1688.4 h]; Cost [162261 AED] | 162,261.32 | 48,678.4 | S07PA22005C0 | 25 |  | 20 | SW | C | 07 | PA | ME | 220 | 05 | 1S | BILL 9 | B09 | S2 | 1F | R00 | ACF04 | MEP | 220 | M1F |  |  |  |  |  |  |  |  |  |  |  |
| S07PA23009C0 |  | SW-07 ; 2nd Fix, Inst of VAV'S CHW connection (Public Area) | 42d | 2011-09-05 A | 2012-01-18 | S07PA23017C0 | 5% | 39.9d | 2011-12-20 | 2012-02-09 | 66.55d | 0d | MECHANICAL [1836 h]; Cost [55043.4 AED] | 55,043.41 | 2,752.17 | S07PA23009C0 |  |  |  | SW | C | 07 | PA | ME | 230 | 09 | 2n | BILL 9 | B09 | S2 | 2F | R00 | ACF07 | MEP | 230 |  |  |  |  |  |  |  |  |  |  |  |  |
| S07PA22011C0 |  | SW-07 ; 2nd Fix, Drainage/Water pipe (wall) (Public Area) | 42d | 2011-10-22 | 2011-12-15 | S07PA09201C0 |  |  |  |  | 48d | 0d | PLUMBING [588 h]; Cost |  |  | S07PA22011C0 | 10 |  |  | SW | C | 07 | PA | ME | 220 | 11 | 2n | BILL 9 | B09 | S2 | 2F | R00 | ACF07 | MEP | 220 |  |  |  |  |  |  |  |  |  |  |  |  |
| S07PA26009C0 |  | SW-07 ; 2nd Fix, Inst of Wall conduites (Public Area) | 42d | 2011-10-22 | 2011-12-15 | S07PA09201C0 |  |  |  |  | 48d | 0d | ELECTRICAL [2139.6 h]; Cost |  |  | S07PA26009C0 | 20 |  |  | SW | C | 07 | PA | ME | 260 | 09 | 2n | BILL 9 | B09 | S2 | 2F | R00 | ACF07 | MEP | 260 |  |  |  |  |  |  |  |  |  |  |  |  |
| S07PA27001C0 |  | SW-07 ; 1st Fix, Wiring/ Cabling work (Public Area) | 48d | 2011-11-12 | 2012-01-09 | S07PA26001C0, S07PA26013C0, S07PA27010C0 |  |  |  |  | 121.75d | 75d | ELECTRICAL [241.2 h]; Cost |  |  | S07PA27001C0 |  |  |  | SW | C | 07 | PA | ME | 270 | 01 | 1S | BILL 9 | B09 | S2 | 1F | R00 | ACF04 | MEP | 270 | M1F |  |  |  |  |  |  |  |  |  |  |  |
| S07PA23008C0 |  | SW-07 ; 1st Fix, Inst of VCD's/FD's (Public Area) | 48d | 2011-11-24 | 2012-01-23 | S07PA23023C0 |  |  |  |  | 110.65d | 63.9d | MECHANICAL [1111.2 h]; Cost |  |  | S07PA23008C0 |  |  |  | SW | C | 07 | PA | ME | 230 | 08 | 1S | BILL 9 | B09 | S2 | 1F | R00 | ACF04 | MEP | 230 | M1F |  |  |  |  |  |  |  |  |  |  |  |
| S07PA08103C0 |  | SW-07 ; Door Frames (Public Area) | 36d | 2011-12-08 | 2012-01-19 | S07PA09201C0, GNHE08101C0 FS+69d, S07F108103C0 SS+3d |  |  |  |  | 72.75d | 36d | ASSORTED DOORS [208 h]; Cost |  |  | S07PA08103C0 |  |  |  | SW | C | 07 | PA | DO | 081 | 03 |  | BILL 9 | B09 | S2 | DF | R00 | ACF06 |  | 081 |  |  |  |  |  | 316 | 947 |  |  | 08 |  |  |
| S07PA01005C0 |  | SW-07 ; 2nd, Wall Inspection by Consultant (Public Area) | 6d | 2011-12-15 | 2011-12-22 | S07PA22011C0, S07PA26009C0 |  |  |  |  | 48d | 11.25d | Labor General [0.6 h]; Cost |  |  | S07PA01005C0 |  |  |  | SW | C | 07 | PA | ME | 010 | 05 | 2n | BILL 9 | B09 | S2 | WI | R00 | ACF07 | MEP | 010 |  |  |  |  |  |  |  |  |  |  |  |  |
| S07PA09205C0 |  | SW-07 ; Partitions Closing (Public Area) | 48d | 2012-01-07 | 2012-03-03 | S07PA01005C0, S07PA09203C0, S07PA22005C0, S07PA22019C0, SAFOA09212C1 FF, SAFCI22001R02 FS+65d, S07PA08103C0 FF, S07PA21111C0 FF |  |  |  |  | 36.75d | 0d | PARTITIONS [519 m]; PARTITIONS [4937 h]; Cost |  |  | S07PA09205C0 |  |  |  | SW | C | 07 | PA | PT | 092 | 05 |  | BILL 9 | B09 | S2 | FF | R00 | ACF06 | GP | 092 | P2F |  |  |  |  | 315 | 946 |  |  |  |  |  |
| S07PA23015C0 |  | SW-07 ; 2nd Fix, Insulation of CHW pipe & Duct (Public Area) | 48d | 2012-01-18 | 2012-03-15 | S07PA23009C0, S07PA23017C0, S07PA23023C0 |  |  |  |  | 66.55d | 19.8d | MECHANICAL [4532.4 h]; Cost |  |  | S07PA23015C0 |  |  |  | SW | C | 07 | PA | ME | 230 | 15 | 2n | BILL 9 | B09 | S2 | 2F | R00 | ACF07 | MEP | 230 |  |  |  |  |  |  |  |  |  |  |  |  |
| S07PA09901C0 |  | SW-07 ; Wall Prime & 1st coat (Public Area) | 30d | 2012-03-04 | 2012-04-07 | S07PA09205C0 |  |  |  |  | 46.75d | 0d | WALL PAINT [856 h]; WALL PAINT [1068 m2]; Cost |  |  | S07PA09901C0 |  |  |  | SW | C | 07 | PA | PA | 099 | 01 |  | BILL 9 | B09 | S2 | 01 | R00 | ACF06 |  | 099 |  |  |  |  |  | 328 | 956 |  |  |  |  |  |
| S07PA26005C0 |  | SW-07 ; 2nd Fix, Wiring for Power/Lighting/Emergency (Public Area) | 42d | 2012-03-04 | 2012-04-21 | S07PA09205C0 |  |  |  |  | 130.75d | 0d | ELECTRICAL [661.2 h]; Cost |  |  | S07PA26005C0 |  |  |  | SW | C | 07 | PA | ME | 260 | 05 | 2n | BILL 9 | B09 | S2 | 2F | R00 | ACF07 | MEP | 260 |  |  |  |  |  |  |  |  |  |  |  |  |
| S07PA26007C0 |  | SW-07 ; 2nd Fix, Cable Pulling (Public Area) | 42d | 2012-03-04 | 2012-04-21 | S07PA09201C0 SS+6d, S07PA09205C0 |  |  |  |  | 172.75d | 126d | ELECTRICAL [1953.6 h]; Cost |  |  | S07PA26007C0 |  |  |  | SW | C | 07 | PA | ME | 260 | 07 | 2n | BILL 9 | B09 | S2 | 2F | R00 | ACF07 | MEP | 260 |  |  |  |  |  |  |  |  |  |  |  |  |
| S07PA26011C0 |  | SW-07 ; 2nd Fix, Inst of Equipment (DB) (Public Area) | 48d | 2012-03-04 | 2012-04-28 | S07PA09205C0 |  |  |  |  | 118.75d | 72d | ELECTRICAL [746.4 h]; Cost |  |  | S07PA26011C0 |  |  |  | SW | C | 07 | PA | ME | 260 | 11 | 2n | BILL 9 | B09 | S2 | 2F | R00 | ACF04 | MEP | 260 |  |  |  |  |  |  |  |  |  |  | E |  |
| S07PA26053C0 |  | SW-07 ; 2nd Fix, Wiring / Cabling (Public Area) | 42d | 2012-03-04 | 2012-04-21 | S07PA09203C0, S07PA09205C0 |  |  |  |  | 70.75d | 24d | ELECTRICAL [661.2 h]; Cost |  |  | S07PA26053C0 |  |  |  | SW | C | 07 | PA | ME | 260 | 53 | 2n | BILL 9 | B09 | S2 | 2F | R00 | ACF07 | MEP | 260 |  |  |  |  |  | 389 | 977 |  |  |  |  |  |
| S07PA05501C0 |  | SW-07 ; Handrails & balustrade (Public Area) | 36d | 2012-04-08 | 2012-05-19 | S07PA09901C0, SAFT1505509C0, SAFT105509C0, SAFT1105509C0, SAFT2305509C0 |  |  |  |  | 58.75d | 0d | SECONDARY STEEL [220 h]; Cost |  |  | S07PA05501C0 |  |  |  | SW | C | 07 | PA | SW | 055 | 01 |  | BILL 9 | B09 | S2 | 01 | R00 | ACF03 |  | a |  |  |  |  |  |  |  |  |  |  |  |  |
| S07PA09501C0 |  | SW-07 ; Ceiling Grid and Service Tile (Public Area) | 36d | 2012-04-08 | 2012-05-19 | S07PA09205C0 SS+15d, S07PA21117C0, S07PA23008C0, S07PA23009C0, S07PA23015C0, S07PA27001C0, SAFCI22002R02 FS+65d, S07PA26053C0 FF, S07PA21111C0, S07PA09901C0 |  |  |  |  | 46.75d | 0d | CEILING GRID FOR GYPSUM [905.82 h]; CEILING GRID FOR GYPSUM [77.47 m2]; Cost |  |  | S07PA09501C0 |  |  |  | SW | C | 07 | PA | CE | 095 | 01 |  | BILL 9 | B09 | S2 | 01 | R00 | ACF06 |  | 095 |  |  |  |  |  | 323 | 952 |  |  |  |  | R3 |
| S07PA26015C0 |  | SW-07 ; Final Fix, Termination & Gladding of Cables (Public Area) | 36d | 2012-04-22 | 2012-06-02 | S07PA26005C0 |  |  |  |  | 130.75d | 66d | ELECTRICAL [85.2 h]; Cost |  |  | S07PA26015C0 |  |  |  | SW | C | 07 | PA | ME | 260 | 15 | FF | BILL 9 | B09 | S2 | FF | R00 | ACF07 | MEP | 260 |  |  |  |  |  |  |  |  |  |  |  |  |
| S07PA09601C0 |  | SW-07 ; Flooring (Rubber & etc) (Public Area) | 42d | 2012-05-20 | 2012-07-08 | S07PA09901C0, SAFCI22002R02 FS+65d, S07PA09501C0, S07PA05501C0 |  |  |  |  | 58.75d | 0d | RUBBER FLOOR [192 h]; RUBBER FLOOR [470 m2]; Cost |  |  | S07PA09601C0 |  |  |  | SW | C | 07 | PA | FF | 096 | 01 |  | BILL 9 | B09 | S2 | 03 | R00 | ACF06 |  | RF |  |  |  |  |  | 326 | 955 |  |  |  |  | R3 |
| S07PA09602C0 |  | SW-07 ; Flooring (Stone) (Public Area) | 42d | 2012-05-20 | 2012-07-08 | S07PA09901C0, SAFCI22002R02 FS+65d, S07PA09501C0 |  |  |  |  | 58.75d | 0d | STONE FLOOR [175 m2]; STONE FLOOR [160 h]; Cost |  |  | S07PA09601C0 |  |  |  | SW | C | 07 | PA | FF | 096 | 01 |  | BILL 9 | B09 | S2 | 09 | R00 | ACF06 |  | ST |  |  |  |  |  | 326 | 955 |  |  |  |  | R3 |
| S07PA09905C0 |  | SW-07 ; Ceiling Prime & 1st coat (Public Area) | 30d | 2012-05-20 | 2012-06-24 | S07PA09501C0 |  |  |  |  | 144.75d | 0d | CEILING PAINT [53 h]; CEILING PAINT [65 m2]; Cost |  |  | S07PA09905C0 |  |  |  | SW | C | 07 | PA | PA | 099 | 05 |  | BILL 9 | B09 | S2 | 01 | R00 | ACF06 |  | 099 |  |  |  |  |  | 330 | 958 |  |  |  |  |  |
| S07PA21115C0 |  | SW-07 ; 2nd Fix, Inst of Sprinkler droppers (Public Area) | 42d | 2012-05-20 | 2012-07-08 | S07PA09501C0 |  |  |  |  | 64.75d | 0d | MECHANICAL [1682.4 h]; Cost |  |  | S07PA21115C0 |  |  |  | SW | C | 07 | PA | ME | 211 | 15 | 2n | BILL 9 | B09 | S2 | 2F | R00 | ACF07 | MEP | 211 |  |  |  |  |  |  |  |  |  |  |  |  |
| S07PA23021C0 |  | SW-07 ; 2nd Fix, Inst of Flexible Duct & Plenum boxes (Public Area) | 42d | 2012-05-20 | 2012-07-08 | S07PA09205C0, S07PA09501C0 |  |  |  |  | 64.75d | 0d | MECHANICAL [982.8 h]; Cost |  |  | S07PA23021C0 |  |  |  | SW | C | 07 | PA | ME | 230 | 21 | 2n | BILL 9 | B09 | S2 | 2F | R00 | ACF07 | MEP | 230 |  |  |  |  |  |  |  |  |  |  |  |  |
| S07PA26017C0 |  | SW-07 ; Final Fix, Inst of Ceiling rose (Public Area) | 36d | 2012-05-20 | 2012-07-01 | S07PA09501C0 |  |  |  |  | 64.75d | 0d | ELECTRICAL [36 h]; Cost |  |  | S07PA26017C0 |  |  |  | SW | C | 07 | PA | ME | 260 | 17 | FF | BILL 9 | B09 | S2 | FF | R00 | ACF07 | MEP | 260 |  |  |  |  |  |  |  |  |  |  |  |  |
| S07PA27002C0 |  | SW-07 ; 2nd Fix, Wiring Droppers (Public Area) | 42d | 2012-05-20 | 2012-07-08 | S07PA09501C0 |  |  |  |  | 64.75d | 0d | ELECTRICAL [661.2 h]; Cost |  |  | S07PA27002C0 |  |  |  | SW | C | 07 | PA | ME | 270 | 02 | 2n | BILL 9 | B09 | S2 | 2F | R00 | ACF07 | MEP | 270 |  |  |  |  |  |  |  |  |  |  |  |  |
| S07PA27020C0 |  | SW-07 ; 2nd Fix, Inst of ELV Equipment (Panels) (Public Area) | 54d | 2012-05-20 | 2012-07-22 | S07PA09205C0, S07PA09501C0 |  |  |  |  | 46.75d | 0d | ELECTRICAL [2151.6 h]; Cost |  |  | S07PA27020C0 |  |  |  | SW | C | 07 | PA | ME | 270 | 20 | 2n | BILL 9 | B09 | S2 | 2F | R00 | ACF04 | MEP | 270 |  |  |  |  |  |  |  |  |  |  | E |  |
| S07PA09903C0 |  | SW-07 ; Wall Final Paint (Public Area) | 30d | 2012-06-25 | 2012-07-29 | S07PA09901C0, S07PA09905C0 |  |  |  |  | 144.75d | 72d | WALL PAINT [462 h]; WALL PAINT [575 m2]; Cost |  |  | S07PA09903C0 |  |  |  | SW | C | 07 | PA | PA | 099 | 03 |  | BILL 9 | B09 | S2 | 02 | R00 | ACF06 |  | 099 |  |  |  |  |  | 329 | 957 |  |  |  |  |  |
| S07PA26003C0 |  | SW-07 ; Final Fix, Inst of Light fittings (Public Area) | 42d | 2012-07-02 | 2012-08-21 | S07PA09501C0, S07PA26017C0 |  |  |  |  | 64.75d | 0d | ELECTRICAL [4813.2 h]; Cost |  |  | S07PA26003C0 |  |  |  | SW | C | 07 | PA | ME | 260 | 03 | FF | BILL 9 | B09 | S2 | FF | R00 | ACF07 | MEP | 260 |  |  |  |  |  |  |  |  |  |  |  |  |
| S07PA08107C0 |  | SW-07 ; Doors (Public Area) | 36d | 2012-07-09 | 2012-08-21 | S07PA08103C0, S07PA09901C0, S07PA09601C0, S07PA09602C0 |  |  |  |  | 98.75d | 0d | ASSORTED DOORS [510 h]; ASSORTED DOORS [51 no]; Cost |  |  | S07PA08107C0 |  |  |  | SW | C | 07 | PA | DO | 081 | 07 |  | BILL 9 | B09 | S2 | DR | R00 | ACF06 |  | 081 |  |  |  |  |  | 317 | 948 |  |  | 08 |  |  |
| S07PA21113C0 |  | SW-07 ; Final Fix, Inst of Sprinklers head/ Extinguisher (Public Area) | 36d | 2012-07-09 | 2012-08-21 | S07PA09501C0, S07PA21115C0 |  |  |  |  | 64.75d | 0d | MECHANICAL [237.6 h]; Cost |  |  | S07PA21113C0 |  |  |  | SW | C | 07 | PA | ME | 211 | 13 | FF | BILL 9 | B09 | S2 | FF | R00 | ACF07 | MEP | 211 |  |  |  |  |  |  |  |  |  |  |  |  |
| S07PA23019C0 |  | SW-07 ; Final Fix, Inst of Grilles & Diffusers (Public Area) | 36d | 2012-07-09 | 2012-08-21 | S07PA09501C0, S07PA23021C0 |  |  |  |  | 64.75d | 0d | MECHANICAL [835.2 h]; Cost |  |  | S07PA23019C0 |  |  |  | SW | C | 07 | PA | ME | 230 | 19 | FF | BILL 9 | B09 | S2 | FF | R00 | ACF07 | MEP | 230 |  |  |  |  |  |  |  |  |  |  |  |  |
| S07PA27030C0 |  | SW-07 ; Final Fix, Inst of ELV devise (Detector/Speaker) (Public Area) | 36d | 2012-07-09 | 2012-08-21 | S07PA09501C0, S07PA27002C0 |  |  |  |  | 64.75d | 0d | ELECTRICAL [1348.8 h]; Cost |  |  | S07PA27030C0 |  |  |  | SW | C | 07 | PA | ME | 270 | 30 | FF | BILL 9 | B09 | S2 | FF | R00 | ACF07 | MEP | 270 |  |  |  |  |  |  |  |  |  |  |  |  |
| S07PA09701C0 |  | SW-07 ; Wall finishes (ST, WD, WC) (Public Area) | 48d | 2012-07-23 | 2012-09-18 | S07PA26011C0, S07PA27020C0, SVT3414211C0, SVT4114211C0, SVT4314211C0, TVT3114211C0, TVT3214255C0, TVT3314245C0, SAFCI22002R02 FS+164d, S07PA09602C0, S07PA09601C0 |  |  |  |  | 46.75d | 0d | ASSORTED WALL FINISH [952 h]; ASSORTED WALL FINISH [1094 m2]; Cost |  |  | S07PA09701C0 |  |  |  | SW | C | 07 | PA | WF | 097 | 01 |  | BILL 9 | B09 | S2 | 01 | R00 | ACF06 |  | 097 |  |  |  |  |  | 105 | 1002 |  |  |  |  |  |
| S07PA01006C0 |  | SW-07 ; 2nd, Ceiling Inspection by Consultants (Public Area) | 6d | 2012-08-22 | 2012-08-28 | S07PA21115C0, S07PA23009C0, S07PA23015C0, S07PA27002C0, S07PA09501C0, S07PA21113C0, S07PA23019C0, S07PA26003C0, S07PA26017C0, S07PA27030C0, S07PA26015C0 |  |  |  |  | 64.75d | 18d | Labor General [0.6 h]; Cost |  |  | S07PA01006C0 |  |  |  | SW | C | 07 | PA | ME | 010 | 06 | 2n | BILL 9 | B09 | S2 | CI | R00 | ACF07 | MEP | 010 |  |  |  |  |  |  |  |  |  |  |  |  |
| S07PA08709C0 |  | SW-07 ; Ironmongery (Public Area) | 28d | 2012-08-22 | 2012-09-23 | S07PA08107C0 |  |  |  |  | 98.75d | 52d | IRONMONGERY [440 h]; IRONMONGERY [44 no]; Cost |  |  | S07PA08709C0 |  |  |  | SW | C | 07 | PA | DO | 087 | 09 |  | BILL 9 | B09 | S2 | IM | R00 | ACF06 |  | 087 |  |  |  |  |  | 322 | 951 |  |  | 08 |  |  |
| S07PA09503C0 |  | SW-07 ; Ceiling closure - ACT/Gypsum (Public Area) | 26d | 2012-09-19 | 2012-10-18 | S07PA01006C0, S07PA21115C0, S07PA26005C0, S07PA27001C0, S07PA27002C0, SAFOA09511C1 FF, S07PA09701C0, S07PA23021C0, S07PA26007C0 |  |  |  |  | 46.75d | 0d | ASSORTED CEILING FINISH [853.62 h]; CEILING GYPSUM [25.42 h]; ASSORTED CEILING FINISH [1388 m2]; CEILING GYPSUM [77 m2]; Cost |  |  | S07PA09503C0 |  |  |  | SW | C | 07 | PA | CE | 095 | 03 |  | BILL 9 | B09 | S2 | 02 | R00 | ACF06 |  | 095 |  |  |  |  |  | 324 | 953 |  |  |  |  | R3 |
| S07PA11001C0 |  | SW-07 ; Wall Protection (WP, CG, WG, FCG) (Public Area) | 24d | 2012-09-19 | 2012-10-16 | S07PA09701C0, S07PA09903C0 SS |  |  |  |  | 78.75d | 32d | Labor General [2 h]; Cost |  |  | S07PA11001C0 |  |  |  | SW | C | 07 | PA | WF | 110 | 01 |  | BILL 9 | B09 | S2 | 03 | R00 | ACF08 |  | b |  |  |  |  |  | 326 | 1001 |  |  |  |  |  |
| S07PA11009C0 |  | SW-07 ; Signage (Public Area) | 15d | 2012-09-19 | 2012-10-06 | S07PA09701C0 |  |  |  |  | 87.75d | 41d | SIGNAGES [170 h]; SIGNAGES [169.85 no]; Cost |  |  | S07PA11009C0 |  |  |  | SW | C | 07 | PA | SA | 110 | 09 |  | BILL 9 | B09 | S2 | 09 | R00 | ACF08 |  | c |  |  |  |  |  | 322 | 951 |  |  | 08 |  |  |
| S07PA09907C0 |  | SW-07 ; Ceiling Final paint (Public Area) | 18d | 2012-10-20 | 2012-11-11 | S07PA09601C0, S07PA09905C0, S07PA09602C0, S07PA09503C0 |  |  |  |  | 58.75d | 12d | CEILING PAINT [29 h]; CEILING PAINT [35 m2]; Cost |  |  | S07PA09907C0 |  |  |  | SW | C | 07 | PA | PA | 099 | 07 |  | BILL 9 | B09 | S2 | 02 | R00 | ACF06 |  | 099 |  |  |  |  |  | 331 | 959 |  |  |  |  |  |
| S07PA26019C0 |  | SW-07 ; Final Fix, Inst of Switch/Sockets (Public Area) | 18d | 2012-10-20 | 2012-11-11 | S07PA09901C0, S07PA09503C0 |  |  |  |  | 46.75d | 0d | ELECTRICAL [256.8 h]; Cost |  |  | S07PA26019C0 |  |  |  | SW | C | 07 | PA | ME | 260 | 19 | FF | BILL 9 | B09 | S2 | FF | R00 | ACF07 | MEP | 260 |  |  |  |  |  |  |  |  |  |  |  |  |

| ID | WBS | Activity | Duration | Start | Finish | Predecessors | Complete | Remaining | Planned start | Planned finish | Total float | Free float | Resources | Cost | Actual cost | change id | CCAD BUILDING(SET) | CCAD PHASE(SET) | CCAD FLOOR(SET) | CCAD ZONE(SET) | CCAD WORK(SET) | CCAD SECTION(SET) | CCAD SERIAL No.(SET) | CCAD CBS(SET) | CCAD BILL(SET) | CCAD HANDOVER(SET) | CCAD TAG(SET) | CCAD REV(SET) | CCADACF (SET) | CCAD SSCF | user_number8 | user_integer1 | user_integer2 | user_number7 | Change Order # | NEW ACTIVITY ID | P_811 | P_711 | U% | CCAD CSA | Act Selector % | R3 Partitions | July2011 Target% Complete | CCAD SUB ZONE MEP(SET) | CCAD DIVISION(SET) | CCAD MEQ | R3 Finish |
| --- | --- | --- | --- | --- | --- | --- | --- | --- | --- | --- | --- | --- | --- | --- | --- | --- | --- | --- | --- | --- | --- | --- | --- | --- | --- | --- | --- | --- | --- | --- | --- | --- | --- | --- | --- | --- | --- | --- | --- | --- | --- | --- | --- | --- | --- | --- | --- |
|  | 10 | **Precommissioning Tesing & snagging (Public Area)** |  | 2012-11-12 | 2012-12-23 |  |  |  |  |  |  |  |  |  |  |  |  |  |  |  |  |  |  |  |  |  |  |  |  |  |  |  |  |  |  |  |  |  |  |  |  |  |  |  |  |  |  |
| S07TS01801C0 |  | SW-07 ; MEP de-snag, FIREM sign-off | 12d | 2012-11-12 | 2012-11-26 | S07PA26015C0, S07PA21113C0, S07PA23019C0, S07PA26017C0, S07PA26003C0, S07PA27030C0, S07PA26019C0, S07PA09503C0 |  |  |  |  | 46.75d | 0d | TESTING & COMMISSIONING [2040 h]; Cost |  |  | S07TS01801C0 | SW | C | 07 | TS | SC | 018 | 01 | BILL 9 | B09 | S2 | 01 | R00 | ACF07 | 018 |  |  |  |  |  |  |  |  |  |  |  |  |  |  |  |  |  |
| S07TS01805C0 |  | SW-07 ; Touch-up & Clean / JV inspection /CIR /De-snag | 16d | 2012-11-27 | 2012-12-16 | S07PA08709C0, S07PA09601C0, S07PA09701C0, S07PA09903C0, S07PA09907C0, S07PA11001C0, S07PA11009C0, S07TS01801C0, S07PA05501C0, S07PA09602C0, S07PA09503C0 |  |  |  |  | 46.75d | 0d | TESTING & COMMISSIONING [128 h]; Cost |  |  | S07TS01802C0 | SW | C | 07 | TS | SC | 018 | 02 | BILL 9 | B09 | S2 | 02 | R00 | ACF07 | 018 |  |  |  |  |  |  |  |  |  |  |  |  |  |  |  |  |  |
| S07TS01808C0 |  | SW-07 ; Consultant's final de-snag inspection | 5.25d | 2012-12-17 | 2012-12-23 | S07TS01805C0 |  |  |  |  | 46.75d | 30.75d | Labor General [0.5 h]; Cost |  |  | S07TS01803C0 | SW | C | 07 | TS | SC | 018 | 03 | BILL 9 | B09 | S2 | 03 | R00 | ACF07 | 018 |  |  |  |  |  |  |  |  |  |  |  |  |  |  |  |  |  |
|  | 03 | **Faculty Office** |  | 2011-07-10 | 2013-01-10 |  |  |  |  |  |  |  |  |  |  |  |  |  |  |  |  |  |  |  |  |  |  |  |  |  |  |  |  |  |  |  |  |  |  |  |  |  |  |  |  |  |  |
| S07F109201C0 |  | SW-07 ; Metal Studs (Faculty Office) | 75d | 2011-07-10 A | 2011-11-22 | S07AL09201C0 SS+6d, S07F123001C0 SS, SAFCI09201R02 FS+65d, S07CO04405C0 FF, S07CO04406C0 FF | 75% | 18.75d | 2011-08-02 | 2011-10-31 | 31.75d | 0d | PARTITIONS [4792 h]; PARTITIONS - Metal Studs [503 m]; Cost |  |  | S07F109201C0 | SW | C | 07 | F1 | PT | 092 | 01 | BILL 9 | B09 | S2 | 1F | R00 | ACF06 | 092 | 0 | 0 | 0 | 0 | 313 | 944 | 75 | 70 | 75 | GP | PMS | R3 |  |  |  |  |  |
| S07F121111C0 |  | SW-07 ; 1st Fix, Inst of Sprinkler main pipe (Faculty Office) | 66d | 2011-07-10 A | 2011-10-31 | S07F122005C0 SS+12d, S07F123001C0 | 70% | 19.8d | 2011-10-12 | 2012-01-04 | 64.3d | 0d | MECHANICAL [793.2 h]; Cost [43268 AED] | 43,267.97 | 30,287.58 | S07F121111C0 | SW | C | 07 | F1 | ME | 211 | 11 | BILL 9 | B09 | S2 | 1F | R00 | ACF04 | 211 | 0 | 0 | 0 | 0 |  |  | 30 | 20 | 40 | MEP | M1F |  | 45 | 1S |  |  |  |
| S07F121117C0 |  | SW-07 ; 1st Fix, Inst of Sprinkler branch pipe (Faculty Office) | 66d | 2011-07-10 A | 2011-12-18 | S07F109201C0, S07F121111C0 | 70% | 19.8d | 2011-12-01 | 2012-02-20 | 137.95d | 106.2d | MECHANICAL [682.8 h]; Cost [37306.8 AED] | 37,306.8 | 26,114.76 | S07F121117C0 | SW | C | 07 | F1 | ME | 211 | 17 | BILL 9 | B09 | S2 | 1F | R00 | ACF04 | 211 | 0 | 0 | 0 | 0 |  |  | 30 | 20 | 40 | MEP | M1F |  |  | 1S |  |  |  |
| S07F122019C0 |  | SW-07 ; 1st Fix, Inst of Drainage pipe (ceiling) (Faculty Office) | 120d | 2011-07-10 A | 2011-10-29 | S07F123001C0, S07F126013C0 SS+14d | 85% | 18d | 2011-09-12 | 2012-02-07 | 64.3d | 0d | PLUMBING [310.8 h]; Cost [16770.4 AED] | 16,770.39 | 14,254.83 | S07F122019C0 | SW | C | 07 | F1 | ME | 220 | 19 | BILL 9 | B09 | S2 | 1F | R00 | ACF04 | 220 | 0 | 0 | 0 | 0 |  |  | 80 | 5 | 85 | MEP | M1F |  | 15 | 1S |  |  |  |
| S07F123017C0 |  | SW-07 ; 1st Fix, Inst of CHW pipe (Faculty Office) | 60d | 2011-07-10 A | 2011-11-30 | S07F121111C0 SS+14d, S07F123001C0 | 30% | 42d | 2011-10-29 | 2012-01-14 | 64.3d | 0d | MECHANICAL [1687.2 h]; Cost [92145.2 AED] | 92,145.18 | 27,643.55 | S07F123017C0 | SW | C | 07 | F1 | ME | 230 | 17 | BILL 9 | B09 | S2 | 1F | R00 | ACF04 | 230 | 0 | 0 | 0 | 0 |  |  |  |  |  | MEP | M1F |  |  | 1S |  |  |  |
| S07F126001C0 |  | SW-07 ; 1st Fix, Inst of Trunking/Conduiting (Faculty Office) | 60d | 2011-07-10 A | 2011-10-15 | S07F123001C0, S07S307807C0 | 90% | 6d | 2011-07-30 | 2011-10-10 | 64.3d | 0d | ELECTRICAL [447.6 h]; Cost [24105.1 AED] | 24,105.11 | 21,694.6 | S07F126001C0 | SW | C | 07 | F1 | ME | 260 | 01 | BILL 9 | B09 | S2 | 1F | R00 | ACF04 | 260 | 0 | 0 | 0 | 0 |  |  | 25 | 10 |  | MEP | M1F |  | 25 | 1S |  |  |  |
| S07F126013C0 |  | SW-07 ; 1st Fix, Inst of Cable Tray (Faculty Office) | 60d | 2011-07-10 A | 2011-10-15 | S07F123001C0, S07F127010C0 SS+10d, S07S307807C0 | 90% | 6d | 2011-08-24 | 2011-11-05 | 64.3d | 0d | ELECTRICAL [231.6 h]; Cost [13047.4 AED] | 13,047.37 | 11,742.63 | S07F126013C0 | SW | C | 07 | F1 | ME | 260 | 13 | BILL 9 | B09 | S2 | 1F | R00 | ACF04 | 260 | 0 | 0 | 0 | 0 |  |  |  |  |  | MEP | M1F |  | 15 | 1S |  |  |  |
| S07F127010C0 |  | SW-07 ; 1st Fix, Inst of Trunking for ELV system (Faculty Office) | 66d | 2011-07-10 A | 2011-10-15 | S07F123001C0, S07F126001C0 SS+12d, S07S307807C0 | 90% | 6.6d | 2011-08-13 | 2011-10-31 | 64.3d | 0d | ELECTRICAL [991.2 h]; Cost [51056.8 AED] | 51,056.81 | 45,951.13 | S07F127010C0 | SW | C | 07 | F1 | ME | 270 | 10 | BILL 9 | B09 | S2 | 1F | R00 | ACF04 | 270 | 0 | 0 | 0 | 0 |  |  | 30 | 25 |  | MEP | M1F |  | 25 | 1S |  |  |  |
| S07F109203C0 |  | SW-07 ; Partitions 1st face (Faculty Office) | 75d | 2011-07-13 A | 2011-12-25 | S07F109201C0 | 65% | 26.25d | 2011-09-04 | 2011-12-06 | 53.5d | 21.75d | PARTITIONS [503 m]; PARTITIONS [3755 h]; Cost |  |  | S07F109203C0 | SW | C | 07 | F1 | PT | 092 | 03 | BILL 9 | B09 | S2 | 2F | R00 | ACF06 | 092 | 0 | 0 | 0 | 0 | 314 | 945 | 60 | 30 | 65 | GP | P1F |  |  |  |  |  |  |
| S07F123001C0 |  | SW-07 ; 1st Fix, Inst. of Supports for MEP (Faculty Office) | 42d | 2011-08-10 A | 2011-10-08 | S07S307807C0 | 85% | 6.3d | 2011-07-31 | 2011-09-19 | 55.75d | 0d | MECHANICAL [536.4 h]; Cost [30275.7 AED] | 30,275.67 | 25,734.32 | S07F123001C0 | SW | C | 07 | F1 | ME | 230 | 01 | BILL 9 | B09 | S2 | 1F | R00 | ACF04 | 230 |  |  |  |  |  |  | 25 | 0 | 85 | MEP | M1F |  | 70 | 1S |  |  |  |
| S07F123023C0 |  | SW-07 ; 1st Fix, Inst of Main Ducting (Faculty Office) | 63d | 2011-08-10 A | 2011-12-04 | S07F123001C0, S07F123017C0 SS+10d | 30% | 44.1d | 2011-09-13 | 2011-11-29 | 102.1d | 0d | MECHANICAL [6650.4 h]; Cost [363211 AED] | 363,210.66 | 108,963.2 | S07F123023C0 | SW | C | 07 | F1 | ME | 230 | 23 | BILL 9 | B09 | S2 | 1F | R00 | ACF04 | 230 | 0 | 0 | 0 | 0 |  |  | 10 | 0 | 30 | MEP | M1F |  |  | 1S |  |  |  |
| S07F122005C0 |  | SW-07 ; 1st Fix, Inst of Water supply pipe (ceiling) (Faculty Office) | 54d | 2011-09-05 A | 2011-11-24 | S07F122019C0 SS+14d, S07F123001C0 | 30% | 37.8d | 2011-10-15 | 2011-12-22 | 64.3d | 0d | PLUMBING [1688.4 h]; Cost [162261 AED] | 162,261.32 | 48,678.4 | S07F122005C0 | SW | C | 07 | F1 | ME | 220 | 05 | BILL 9 | B09 | S2 | 1F | R00 | ACF04 | 220 |  |  |  |  |  |  |  |  | 20 | MEP | M1F |  | 15 | 1S |  |  |  |
| S07F123009C0 |  | SW-07 ; 2nd Fix, Inst of VAV'S CHW connection (Faculty Office) | 42d | 2011-09-05 A | 2012-01-18 | S07F123017C0 | 5% | 39.9d | 2011-12-26 | 2012-02-15 | 64.3d | 0d | MECHANICAL [1836 h]; Cost [55043.4 AED] | 55,043.41 | 2,752.17 | S07F123009C0 | SW | C | 07 | F1 | ME | 230 | 09 | BILL 9 | B09 | S2 | 2F | R00 | ACF07 | 230 |  |  |  |  |  |  |  |  |  | MEP |  |  |  | 2n |  |  |  |
| S07F122007C0 |  | SW-07 ; 1st Fix, Inst of Medical Gas pipe (Faculty Office) | 48d | 2011-10-08 | 2011-12-08 | S07F121111C0 SS+14d, S07F123001C0 |  |  |  |  | 68.2d | 36.45d | PLUMBING [187.2 h]; Cost |  |  | S07F122007C0 | SW | C | 07 | F1 | ME | 220 | 07 | BILL 9 | B09 | S2 | 1F | R00 | ACF04 | 220 |  |  |  |  |  |  |  |  |  | MEP | M1F |  |  | 1S |  |  |  |
| S07F127001C0 |  | SW-07 ; 1st Fix, Wiring/ Cabling work (Faculty Office) | 48d | 2011-10-15 | 2011-12-15 | S07F126001C0, S07F126013C0, S07F127010C0 |  |  |  |  | 139.6d | 107.85d | ELECTRICAL [241.2 h]; Cost |  |  | S07F127001C0 | SW | C | 07 | F1 | ME | 270 | 01 | BILL 9 | B09 | S2 | 1F | R00 | ACF04 | 270 |  |  |  |  |  |  |  |  |  | MEP | M1F |  |  | 1S |  |  |  |
| S07F122011C0 |  | SW-07 ; 2nd Fix, Drainage/Water pipe (wall) (Faculty Office) | 42d | 2011-11-22 | 2012-01-14 | S07F109201C0 |  |  |  |  | 31.75d | 0d | PLUMBING [588 h]; Cost |  |  | S07F122011C0 | SW | C | 07 | F1 | ME | 220 | 11 | BILL 9 | B09 | S2 | 2F | R00 | ACF07 | 220 |  |  |  |  |  |  |  |  |  | MEP |  |  | 15 | 2n |  |  |  |
| S07F122015C0 |  | SW-07 ; 2nd Fix, Medical Gas pipe (Faculty Office) | 42d | 2011-11-22 | 2012-01-14 | S07F109201C0, S07F122007C0 SS |  |  |  |  | 31.75d | 0d | PLUMBING [465.6 h]; Cost |  |  | S07F122015C0 | SW | C | 07 | F1 | ME | 220 | 15 | BILL 9 | B09 | S2 | 2F | R00 | ACF07 | 220 |  |  |  |  |  |  |  |  |  | MEP |  |  |  | 2n |  |  |  |
| S07F126009C0 |  | SW-07 ; 2nd Fix, Inst of Wall conduites (Faculty Office) | 42d | 2011-11-22 | 2012-01-14 | S07F109201C0 |  |  |  |  | 31.75d | 0d | ELECTRICAL [868.8 h]; Cost |  |  | S07F126009C0 | SW | C | 07 | F1 | ME | 260 | 09 | BILL 9 | B09 | S2 | 2F | R00 | ACF07 | 260 |  |  |  |  |  |  |  |  |  | MEP |  |  | 25 | 2n |  |  |  |
| S07F140302C0 |  | SW-07 ; 2nd Fix, Pneumatic tube (Faculty Office) | 42d | 2011-11-22 | 2012-01-14 | S07F109201C0 |  |  |  |  | 31.75d | 0d | MECHANICAL [1170 h]; Cost |  |  | S07F140302C0 | SW | C | 07 | F1 | ME | 403 | 02 | BILL 9 | B09 | S2 | 2F | R00 | ACF07 | 403 |  |  |  |  |  |  |  |  |  | MEP |  |  | 15 | 2n |  |  |  |
| S07F123008C0 |  | SW-07 ; 1st Fix, Inst of VCD's/FD's (Faculty Office) | 48d | 2011-12-04 | 2012-01-30 | S07F123023C0 |  |  |  |  | 102.1d | 70.35d | MECHANICAL [1111.2 h]; Cost |  |  | S07F123008C0 | SW | C | 07 | F1 | ME | 230 | 08 | BILL 9 | B09 | S2 | 1F | R00 | ACF04 | 230 |  |  |  |  |  |  |  |  |  | MEP | M1F |  |  | 1S |  |  |  |
| S07F108103C0 |  | SW-07 ; Door Frames (Faculty Office) | 36d | 2011-12-05 | 2012-01-16 | S07F109201C0, GNHE08101C0 FS+69d, S07AL08103C0 SS+3d |  |  |  |  | 35.5d | 0d | ASSORTED DOORS [190 h]; Cost |  |  | S07F108103C0 | SW | C | 07 | F1 | DO | 081 | 03 | BILL 9 | B09 | S2 | DF | R00 | ACF06 | 081 |  |  |  |  | 316 | 947 |  |  |  |  |  |  |  |  | 08 |  |  |
| S07F101005C0 |  | SW-07 ; 2nd, Wall Inspection by Consultant (Faculty Office) | 6d | 2012-01-14 | 2012-01-21 | S07F122011C0, S07F122015C0, S07F126009C0, S07F140302C0 |  |  |  |  | 31.75d | 0d | Labor General [0.6 h]; Cost |  |  | S07F101005C0 | SW | C | 07 | F1 | ME | 010 | 05 | BILL 9 | B09 | S2 | WI | R00 | ACF07 | 010 |  |  |  |  |  |  |  |  |  | MEP |  |  |  | 2n |  |  |  |
| S07F123015C0 |  | SW-07 ; 2nd Fix, Insulation of CHW pipe & Duct (Faculty Office) | 48d | 2012-01-18 | 2012-03-15 | S07F123009C0, S07F123017C0, S07F123023C0 |  |  |  |  | 64.3d | 32.55d | MECHANICAL [4532.4 h]; Cost |  |  | S07F123015C0 | SW | C | 07 | F1 | ME | 230 | 15 | BILL 9 | B09 | S2 | 2F | R00 | ACF07 | 230 |  |  |  |  |  |  |  |  |  | MEP |  |  |  | 2n |  |  |  |
| S07F109205C0 |  | SW-07 ; Partitions Closing (Faculty Office) | 48d | 2012-01-21 | 2012-03-18 | S07F101005C0, S07F109203C0, S07F122005C0, S07F122019C0, SAFOA09212C1 FF, S07F108103C0, SAFCI22001R20 FS+65d |  |  |  |  | 31.75d | 0d | PARTITIONS [503 m]; PARTITIONS [4810 h]; Cost |  |  | S07F109205C0 | SW | C | 07 | F1 | PT | 092 | 05 | BILL 9 | B09 | S2 | FF | R00 | ACF06 | 092 |  |  |  |  | 315 | 946 |  |  |  | GP | P2F | R3 |  |  |  |  |  |
| S07F107103C0 |  | SW-07 ; Waterproofing (Faculty Office) | 12d | 2012-03-18 | 2012-04-01 | S07F108103C0, S07F109205C0 |  |  |  |  | 79.75d | 0d | THERMAL & MOISTURE [216 h]; THERMAL & MOISTURE [1445 m2]; Cost |  |  | S07F107103C0 | SW | C | 07 | F1 | FF | 071 | 03 | BILL 9 | B09 | S2 | 01 | R00 | ACF03 | 071 |  |  |  |  | 105 | 999 |  |  |  |  |  |  |  |  |  |  |  |
| S07F109901C0 |  | SW-07 ; Wall Prime & 1st coat (Faculty Office) | 30d | 2012-03-18 | 2012-04-22 | S07F109205C0 |  |  |  |  | 31.75d | 0d | WALL PAINT [784 h]; WALL PAINT [977 m2]; Cost |  |  | S07F109901C0 | SW | C | 07 | F1 | PA | 099 | 01 | BILL 9 | B09 | S2 | 01 | R00 | ACF06 | 099 |  |  |  |  | 328 | 956 |  |  |  |  |  |  |  |  |  |  |  |
| S07F126005C0 |  | SW-07 ; 2nd Fix, Wiring for Power/Lighting/Emergency (Faculty Office) | 42d | 2012-03-18 | 2012-05-06 | S07F109205C0 |  |  |  |  | 121.75d | 0d | ELECTRICAL [661.2 h]; Cost |  |  | S07F126005C0 | SW | C | 07 | F1 | ME | 260 | 05 | BILL 9 | B09 | S2 | 2F | R00 | ACF07 | 260 |  |  |  |  |  |  |  |  |  | MEP |  |  |  | 2n |  |  |  |
| S07F126007C0 |  | SW-07 ; 2nd Fix, Cable Pulling (Faculty Office) | 42d | 2012-03-18 | 2012-05-06 | S07F109201C0 SS+6d, S07F109205C0 |  |  |  |  | 163.75d | 132d | ELECTRICAL [1953.6 h]; Cost |  |  | S07F126007C0 | SW | C | 07 | F1 | ME | 260 | 07 | BILL 9 | B09 | S2 | 2F | R00 | ACF07 | 260 |  |  |  |  |  |  |  |  |  | MEP |  |  |  | 2n |  |  |  |
| S07F126011C0 |  | SW-07 ; 2nd Fix, Inst of Equipment (DB) (Faculty Office) | 48d | 2012-03-18 | 2012-05-13 | S07F109205C0 |  |  |  |  | 103.75d | 72d | ELECTRICAL [746.4 h]; Cost |  |  | S07F126011C0 | SW | C | 07 | F1 | ME | 260 | 11 | BILL 9 | B09 | S2 | 2F | R00 | ACF04 | 260 |  |  |  |  |  |  |  |  |  | MEP |  |  |  | 2n |  | E |  |
| S07F126053C0 |  | SW-07 ; 2nd Fix, Wiring / Cabling (Faculty Office) | 42d | 2012-03-18 | 2012-05-06 | S07F109203C0, S07F109205C0 |  |  |  |  | 55.75d | 24d | ELECTRICAL [661.2 h]; Cost |  |  | S07F126053C0 | SW | C | 07 | F1 | ME | 260 | 53 | BILL 9 | B09 | S2 | 2F | R00 | ACF07 | 260 |  |  |  |  | 389 | 977 |  |  |  | MEP |  |  |  | 2n |  |  |  |
| S07F109305C0 |  | SW-07 ; CeramSW floor tile (Faculty Office) | 42d | 2012-04-01 | 2012-05-20 | S07F107103C0 |  |  |  |  | 79.75d | 0d | CERAMIC FLOOR TILES [280 h]; CERAMIC FLOOR TILES [152 m2]; Cost |  |  | S07F109305C0 | SW | C | 07 | F1 | FF | 093 | 05 | BILL 9 | B09 | S2 | 02 | R00 | ACF06 | CT |  |  |  |  | 106 | 1000 |  |  |  |  |  |  |  |  |  |  |  |
| S07F105501C0 |  | SW-07 ; Handrails & balustrade (Faculty Office) | 36d | 2012-04-22 | 2012-06-03 | S07F109901C0 |  |  |  |  | 31.75d | 0d | SECONDARY STEEL [202 h]; Cost |  |  | S07F105501C0 | SW | C | 07 | F1 | SW | 055 | 01 | BILL 9 | B09 | S2 | 01 | R00 | ACF03 | a |  |  |  |  |  |  |  |  |  |  |  |  |  |  |  |  |  |
| S07F109501C0 |  | SW-07 ; Ceiling Grid and Service Tile (Faculty Office) | 36d | 2012-04-22 | 2012-06-03 | S07F109205C0 SS+15d, S07F121117C0, S07F123008C0, S07F123009C0, S07F123015C0, S07F127001C0, SAFCI22002R02 FS+65d, S07F126053C0 FF, S07F109901C0 |  |  |  |  | 31.75d | 0d | CEILING GRID FOR GYPSUM [827.9 h]; CEILING GRID FOR GYPSUM [70.87 m2]; Cost |  |  | S07F109501C0 | SW | C | 07 | F1 | CE | 095 | 01 | BILL 9 | B09 | S2 | 01 | R00 | ACF06 | 095 |  |  |  |  | 323 | 952 |  |  |  |  |  |  |  |  |  |  | R3 |
| S07F140303C0 |  | SW-07 ; Final Fix, Pneumatic tube (Faculty Office) | 36d | 2012-04-22 | 2012-06-03 | S07F109901C0 |  |  |  |  | 181.75d | 150d | MECHANICAL [1036.8 h]; Cost |  |  | S07F140303C0 | SW | C | 07 | F1 | ME | 403 | 03 | BILL 9 | B09 | S2 | FF | R00 | ACF07 | 403 |  |  |  |  |  |  |  |  |  | MEP |  |  |  | FF |  |  |  |
| S07F126015C0 |  | SW-07 ; Final Fix, Termination & Gladding of Cables (Faculty Office) | 36d | 2012-05-06 | 2012-06-18 | S07F126005C0 |  |  |  |  | 121.75d | 66d | ELECTRICAL [85.2 h]; Cost |  |  | S07F126015C0 | SW | C | 07 | F1 | ME | 260 | 15 | BILL 9 | B09 | S2 | FF | R00 | ACF07 | 260 |  |  |  |  |  |  |  |  |  | MEP |  |  |  | FF |  |  |  |
| S07F122025C0 |  | SW-07 ; Final Fix, Inst of Sanitary Ware (Faculty Office) | 36d | 2012-05-20 | 2012-07-02 | S07F109205C0, S07F109305C0, A10230 FS+148d |  |  |  |  | 79.75d | 0d | PLUMBING [1364.4 h]; Cost |  |  | S07F122025C0 | SW | C | 07 | F1 | ME | 220 | 25 | BILL 9 | B09 | S2 | FF | R00 | ACF07 | 220 |  |  |  |  |  |  |  |  |  | MEP |  |  |  | FF |  |  |  |
| S07F109601C0 |  | SW-07 ; Flooring (Rubber & etc) (Faculty Office) | 42d | 2012-06-03 | 2012-07-23 | S07F109901C0, S07F109501C0, S07F105501C0 |  |  |  |  | 31.75d | 0d | RUBBER FLOOR [176 h]; RUBBER FLOOR [430 m2]; Cost |  |  | S07F109601C0 | SW | C | 07 | F1 | FF | 096 | 01 | BILL 9 | B09 | S2 | 03 | R00 | ACF06 | RF |  |  |  |  | 326 | 955 |  |  |  |  |  |  |  |  |  |  |  |
| S07F109905C0 |  | SW-07 ; Ceiling Prime & 1st coat (Faculty Office) | 30d | 2012-06-03 | 2012-07-09 | S07F109501C0 |  |  |  |  | 131.75d | 0d | CEILING PAINT [49 h]; CEILING PAINT [60 m2]; Cost |  |  | S07F109905C0 | SW | C | 07 | F1 | PA | 099 | 05 | BILL 9 | B09 | S2 | 01 | R00 | ACF06 | 099 |  |  |  |  | 330 | 958 |  |  |  |  |  |  |  |  |  |  |  |
| S07F121115C0 |  | SW-07 ; 2nd Fix, Inst of Sprinkler droppers (Faculty Office) | 42d | 2012-06-03 | 2012-07-23 | S07F109501C0 |  |  |  |  | 55.75d | 0d | MECHANICAL [1682.4 h]; Cost |  |  | S07F121115C0 | SW | C | 07 | F1 | ME | 211 | 15 | BILL 9 | B09 | S2 | 2F | R00 | ACF07 | 211 |  |  |  |  |  |  |  |  |  | MEP |  |  |  | 2n |  |  |  |
| S07F123021C0 |  | SW-07 ; 2nd Fix, Inst of Flexible Duct & Plenum boxes (Faculty Office) | 42d | 2012-06-03 | 2012-07-23 | S07F109205C0, S07F109501C0 |  |  |  |  | 55.75d | 0d | MECHANICAL [982.8 h]; Cost |  |  | S07F123021C0 | SW | C | 07 | F1 | ME | 230 | 21 | BILL 9 | B09 | S2 | 2F | R00 | ACF07 | 230 |  |  |  |  |  |  |  |  |  | MEP |  |  |  | 2n |  |  |  |
| S07F126017C0 |  | SW-07 ; Final Fix, Inst of Ceiling rose (Faculty Office) | 36d | 2012-06-03 | 2012-07-16 | S07F109501C0 |  |  |  |  | 55.75d | 0d | ELECTRICAL [36 h]; Cost |  |  | S07F126017C0 | SW | C | 07 | F1 | ME | 260 | 17 | BILL 9 | B09 | S2 | FF | R00 | ACF07 | 260 |  |  |  |  |  |  |  |  |  | MEP |  |  |  | FF |  |  |  |
| S07F127002C0 |  | SW-07 ; 2nd Fix, Wiring Droppers (Faculty Office) | 42d | 2012-06-03 | 2012-07-23 | S07F109501C0 |  |  |  |  | 55.75d | 0d | ELECTRICAL [661.2 h]; Cost |  |  | S07F127002C0 | SW | C | 07 | F1 | ME | 270 | 02 | BILL 9 | B09 | S2 | 2F | R00 | ACF07 | 270 |  |  |  |  |  |  |  |  |  | MEP |  |  |  | 2n |  |  |  |
| S07F127020C0 |  | SW-07 ; 2nd Fix, Inst of ELV Equipment (Panels) (Faculty Office) | 54d | 2012-06-03 | 2012-08-06 | S07F109205C0, S07F109501C0 |  |  |  |  | 31.75d | 0d | ELECTRICAL [2151.6 h]; Cost |  |  | S07F127020C0 | SW | C | 07 | F1 | ME | 270 | 20 | BILL 9 | B09 | S2 | 2F | R00 | ACF04 | 270 |  |  |  |  |  |  |  |  |  | MEP |  |  |  | 2n |  | E |  |
| S07F122021C0 |  | SW-07 ; Final Fix, Terminate Sanitary Ware & Appliances (Faculty Office) | 36d | 2012-07-02 | 2012-08-13 | S07F122011C0, S07F122025C0 |  |  |  |  | 79.75d | 48d | PLUMBING [1246.8 h]; Cost |  |  | S07F122021C0 | SW | C | 07 | F1 | ME | 220 | 21 | BILL 9 | B09 | S2 | FF | R00 | ACF07 | 220 |  |  |  |  |  |  |  |  |  | MEP |  |  |  | FF |  |  |  |
| S07F109903C0 |  | SW-07 ; Wall Final Paint (Faculty Office) | 30d | 2012-07-09 | 2012-08-13 | S07F109901C0, S07F109905C0 |  |  |  |  | 131.75d | 78d | WALL PAINT [422 h]; WALL PAINT [526 m2]; Cost |  |  | S07F109903C0 | SW | C | 07 | F1 | PA | 099 | 03 | BILL 9 | B09 | S2 | 02 | R00 | ACF06 | 099 |  |  |  |  | 329 | 957 |  |  |  |  |  |  |  |  |  |  |  |
| S07F126003C0 |  | SW-07 ; Final Fix, Inst of Light fittings (Faculty Office) | 42d | 2012-07-16 | 2012-09-05 | S07F109501C0, S07F126017C0 |  |  |  |  | 55.75d | 0d | ELECTRICAL [4813.2 h]; Cost |  |  | S07F126003C0 | SW | C | 07 | F1 | ME | 260 | 03 | BILL 9 | B09 | S2 | FF | R00 | ACF07 | 260 |  |  |  |  |  |  |  |  |  | MEP |  |  |  | FF |  |  |  |
| S07F106101C0 |  | SW-07 ; Wood / caseworks (Faculty Office) | 66d | 2012-07-23 | 2012-10-10 | S07CO04406C0, S07F109501C0, S07F109901C0, SAFWA00105M0, SAFCI22002R02 FS+184d, S07F109601C0 |  |  |  |  | 31.75d | 0d | WOOD WORK/CASEWORK [106.71 no]; WOOD WORK/CASEWORK [3979 h]; Cost |  |  | S07F106101C0 | SW | C | 07 | F1 | WO | 061 | 01 | BILL 9 | B09 | S2 | WW | R00 | ACF06 | 061 |  |  |  |  | 332 | 960 |  |  |  |  |  |  |  |  |  |  |  |
| S07F108107C0 |  | SW-07 ; Doors (Faculty Office) | 36d | 2012-07-23 | 2012-09-05 | S07F108103C0 FF, S07F109901C0, S07F109601C0 |  |  |  |  | 85.75d | 0d | ASSORTED DOORS [460 h]; ASSORTED DOORS [46 no]; Cost |  |  | S07F108107C0 | SW | C | 07 | F1 | DO | 081 | 07 | BILL 9 | B09 | S2 | DR | R00 | ACF06 | 081 |  |  |  |  | 317 | 948 |  |  |  |  |  |  |  |  | 08 |  |  |
| S07F121113C0 |  | SW-07 ; Final Fix, Inst of Sprinklers head/ Extinguisher (Faculty Office) | 36d | 2012-07-23 | 2012-09-05 | S07F109501C0, S07F121115C0 |  |  |  |  | 55.75d | 0d | MECHANICAL [237.6 h]; Cost |  |  | S07F121113C0 | SW | C | 07 | F1 | ME | 211 | 13 | BILL 9 | B09 | S2 | FF | R00 | ACF07 | 211 |  |  |  |  |  |  |  |  |  | MEP |  |  |  | FF |  |  |  |
| S07F123019C0 |  | SW-07 ; Final Fix, Inst of Grilles & Diffusers (Faculty Office) | 36d | 2012-07-23 | 2012-09-05 | S07F109501C0, S07F123021C0 |  |  |  |  | 55.75d | 0d | MECHANICAL [835.2 h]; Cost |  |  | S07F123019C0 | SW | C | 07 | F1 | ME | 230 | 19 | BILL 9 | B09 | S2 | FF | R00 | ACF07 | 230 |  |  |  |  |  |  |  |  |  | MEP |  |  |  | FF |  |  |  |
| S07F127030C0 |  | SW-07 ; Final Fix, Inst of ELV devise (Detector/Speaker) (Faculty Office) | 36d | 2012-07-23 | 2012-09-05 | S07F109501C0, S07F127002C0 |  |  |  |  | 55.75d | 0d | ELECTRICAL [1348.8 h]; Cost |  |  | S07F127030C0 | SW | C | 07 | F1 | ME | 270 | 30 | BILL 9 | B09 | S2 | FF | R00 | ACF07 | 270 |  |  |  |  |  |  |  |  |  | MEP |  |  |  | FF |  |  |  |
| S07F109701C0 |  | SW-07 ; Wall finishes (ST, WD, WC) (Faculty Office) | 54d | 2012-08-06 | 2012-10-10 | S07F126011C0, S07F127020C0, SAFCI22002R02 FS+164d, S07F109601C0 |  |  |  |  | 31.75d | 0d | ASSORTED WALL FINISH [872 h]; ASSORTED WALL FINISH [1001 m2]; Cost |  |  | S07F109701C0 | SW | C | 07 | F1 | WF | 097 | 01 | BILL 9 | B09 | S2 | 01 | R00 | ACF06 | 097 |  |  |  |  | 105 | 1002 |  |  |  |  |  |  |  |  |  |  |  |
| S07F101006C0 |  | SW-07 ; 2nd, Ceiling Inspection by Consultants (Faculty Office) | 6d | 2012-09-05 | 2012-09-12 | S07F121115C0, S07F123009C0, S07F123015C0, S07F127002C0, S07F109501C0, S07F121113C0, S07F123019C0, S07F126003C0, S07F126017C0, S07F127030C0, S07F126015C0 |  |  |  |  | 55.75d | 24d | Labor General [0.6 h]; Cost |  |  | S07F101006C0 | SW | C | 07 | F1 | ME | 010 | 06 | BILL 9 | B09 | S2 | CI | R00 | ACF07 | 010 |  |  |  |  |  |  |  |  |  | MEP |  |  |  | 2n |  |  |  |
| S07F108709C0 |  | SW-07 ; Ironmongery (Faculty Office) | 28d | 2012-09-05 | 2012-10-08 | S07F108107C0 |  |  |  |  | 85.75d | 54d | IRONMONGERY [410 h]; IRONMONGERY [41 no]; Cost |  |  | S07F108709C0 | SW | C | 07 | F1 | DO | 087 | 09 | BILL 9 | B09 | S2 | IM | R00 | ACF06 | 087 |  |  |  |  | 322 | 951 |  |  |  |  |  |  |  |  | 08 |  |  |
| S07F109503C0 |  | SW-07 ; Ceiling closure - ACT/Gypsum (Faculty Office) | 24d | 2012-10-10 | 2012-11-10 | S07F101006C0, S07F121115C0, S07F126005C0, S07F127001C0, S07F127002C0, SAFOA09511C1 FF, S07F106101C0, S07F109701C0, S07F123021C0, S07F126007C0, S07F122021C0 |  |  |  |  | 31.75d | 0d | ASSORTED CEILING FINISH [781.05 h]; CEILING GYPSUM [23.16 h]; ASSORTED CEILING FINISH [1270 m2]; CEILING GYPSUM [71 m2]; Cost |  |  | S07F109503C0 | SW | C | 07 | F1 | CE | 095 | 03 | BILL 9 | B09 | S2 | 02 | R00 | ACF06 | 095 |  |  |  |  | 324 | 953 |  |  |  |  |  |  |  |  |  |  | R3 |
| S07F111001C0 |  | SW-07 ; Wall Protection (WP, CG, WG, FCG) (Faculty Office) | 24d | 2012-10-10 | 2012-11-10 | S07F109701C0, S07F109903C0 SS |  |  |  |  | 59.75d | 28d | Labor General [2 h]; Cost |  |  | S07F111001C0 | SW | C | 07 | F1 | WF | 110 | 01 | BILL 9 | B09 | S2 | 03 | R00 | ACF08 | b |  |  |  |  | 326 | 1001 |  |  |  |  |  |  |  |  |  |  |  |
| S07F122029C0 |  | SW-07 ; Final Fix, Medical Gas pipe (Faculty Office) | 18d | 2012-10-10 | 2012-11-03 | S07F109501C0, S07F106101C0 |  |  |  |  | 55.75d | 24d | PLUMBING [187.2 h]; Cost |  |  | S07F122029C0 | SW | C | 07 | F1 | ME | 220 | 29 | BILL 9 | B09 | S2 | FF | R00 | ACF07 | 220 |  |  |  |  |  |  |  |  |  | MEP |  |  |  | FF |  |  |  |
| S07F109671C1 |  | SW-07, Carpet Tile Finish (Faculty Office) | 0d | 2012-11-10 | 2012-11-10 | S07F109903C0 SS, S07F109907C0 SS |  |  |  |  | 59.75d | 28d | Cost |  |  |  | SW | C | 07 | F1 | FF | 096 |  |  | B09 |  |  | R00 | ACF06 | CPT |  |  |  |  |  |  |  |  |  | CPT |  |  |  |  |  |  |  |
| S07F109907C0 |  | SW-07 ; Ceiling Final paint (Faculty Office) | 18d | 2012-11-10 | 2012-12-02 | S07F109601C0, S07F109905C0, S07F109503C0 |  |  |  |  | 41.75d | 0d | CEILING PAINT [26 h]; CEILING PAINT [32 m2]; Cost |  |  | S07F109907C0 | SW | C | 07 | F1 | PA | 099 | 07 | BILL 9 | B09 | S2 | 02 | R00 | ACF06 | 099 |  |  |  |  | 331 | 959 |  |  |  |  |  |  |  |  |  |  |  |
| S07F111003C0 |  | SW-07 ; FF & E (Faculty Office) | 18d | 2012-11-10 | 2012-12-02 | S07F109601C0, S07F106101C0, S07F109503C0 |  |  |  |  | 41.75d | 10d | FF&E [169 h]; FF&E [89.88 no]; Cost |  |  | S07F111003C0 | SW | C | 07 | F1 | WO | 110 | 03 | BILL 9 | B09 | S2 | FF&E | R00 | ACF08 | a |  |  |  |  | 333 | 961 |  |  |  |  |  |  |  |  |  |  |  |
| S07F122027C0 |  | SW-07 ; Final Fix, Inst of All drain (Faculty Office) | 18d | 2012-11-10 | 2012-12-02 | S07F109305C0, S07F109503C0 |  |  |  |  | 31.75d | 0d | PLUMBING [310.8 h]; Cost |  |  | S07F122027C0 | SW | C | 07 | F1 | ME | 220 | 27 | BILL 9 | B09 | S2 | FF | R00 | ACF07 | 220 |  |  |  |  |  |  |  |  |  | MEP |  |  |  | FF |  |  |  |
| S07F126019C0 |  | SW-07 ; Final Fix, Inst of Switch/Sockets (Faculty Office) | 18d | 2012-11-10 | 2012-12-02 | S07F109901C0, S07F109503C0 |  |  |  |  | 31.75d | 0d | ELECTRICAL [256.8 h]; Cost |  |  | S07F126019C0 | SW | C | 07 | F1 | ME | 260 | 19 | BILL 9 | B09 | S2 | FF | R00 | ACF07 | 260 |  |  |  |  |  |  |  |  |  | MEP |  |  |  | FF |  |  |  |

| ID | WBS | Activity | Duration | Start | Finish | Predecessors | Complete | Remaining | Planned start | Planned finish | Total float | Free float | Resources | Cost | Actual cost | change id | CCAD BUILDING(SET) | CCAD PHASE(SET) | CCAD FLOOR(SET) | CCAD ZONE(SET) | CCAD WORK(SET) | CCAD SECTION(SET) | CCAD SERIAL No.(SET) | CCAD CBS(SET) | CCAD BILL(SET) | CCAD HANDOVER(SET) | CCAD TAG(SET) | CCAD REV(SET) | CCADACF (SET) | CCAD SSCF | user_number8 | user_integer1 | user_integer2 | user_number7 | Change Order # | NEW ACTIVITY ID | Claimed This Month | P_811 | P_711 | U% | CCAD CSA | Act Selector % | July2011 Target% Complete | CCAD SUB ZONE MEP(SET) | CCAD DIVISION(SET) | Actual Cost | Phase | Area/ Department | Grids | Are | Weight & Nos | Process | Levels | CCAD MEQ |
| --- | --- | --- | --- | --- | --- | --- | --- | --- | --- | --- | --- | --- | --- | --- | --- | --- | --- | --- | --- | --- | --- | --- | --- | --- | --- | --- | --- | --- | --- | --- | --- | --- | --- | --- | --- | --- | --- | --- | --- | --- | --- | --- | --- | --- | --- | --- | --- | --- | --- | --- | --- | --- | --- | --- |
|  | 10 | **Precommissioning Tesing & snagging (Faculty Office)** |  | 2012-12-02 | 2013-01-10 |  |  |  |  |  |  |  |  |  |  |  |  |  |  |  |  |  |  |  |  |  |  |  |  |  |  |  |  |  |  |  |  |  |  |  |  |  |  |  |  |  |  |  |  |  |  |  |  |  |
| S07TS01811C0 |  | SW-07 ; MEP de-snag, FIREM sign-off | 10d | 2012-12-02 | 2012-12-15 | S07F126015C0, S07F122025C0, S07F122027C0, S07F121113C0, S07F123019C0, S07F122029C0, S07F126017C0, S07F126003C0, S07F127030C0, S07F122021C0, S07F140303C0, S07F126019C0 |  |  |  |  | 31.75d | 0d | TESTING & COMMISSIONING [510 h]; Cost |  |  | S07TS01801C0 | SW | C | 07 | TS | SC | 018 | 01 | BILL 9 | B09 | S2 | 01 | R00 | ACF07 | 018 |  |  |  |  |  |  |  |  |  |  |  |  |  |  |  |  |  |  |  |  |  |  |  |  |
| S07TS01806C0 |  | SW-07 ; Touch-up & Clean / JV inspection /CIR /De-snag | 14.5d | 2012-12-15 | 2013-01-02 | S07F106101C0, S07F108709C0, S07F109305C0, S07F109601C0, S07F109701C0, S07F109903C0, S07F109907C0, S07F111001C0, S07F111003C0, S07TS01811C0, S07F105501C0, S07F109503C0, S07F109671C1 |  |  |  |  | 31.75d | 0d | TESTING & COMMISSIONING [128 h]; Cost |  |  | S07TS01802C0 | SW | C | 07 | TS | SC | 018 | 02 | BILL 9 | B09 | S2 | 02 | R00 | ACF07 | 018 |  |  |  |  |  |  |  |  |  |  |  |  |  |  |  |  |  |  |  |  |  |  |  |  |
| S07TS01809C0 |  | SW-07 ; Consultant's final de-snag inspection | 7d | 2013-01-02 | 2013-01-10 | S07TS01806C0 |  |  |  |  | 31.75d | 15.75d | Labor General [1 h]; Cost |  |  | S07TS01803C0 | SW | C | 07 | TS | SC | 018 | 03 | BILL 9 | B09 | S2 | 03 | R00 | ACF07 | 018 |  |  |  |  |  |  |  |  |  |  |  |  |  |  |  |  |  |  |  |  |  |  |  |  |
|  | 04 | **Ambulatory Lounge** |  | 2011-06-08 | 2013-01-03 |  |  |  |  |  |  |  |  |  |  |  |  |  |  |  |  |  |  |  |  |  |  |  |  |  |  |  |  |  |  |  |  |  |  |  |  |  |  |  |  |  |  |  |  |  |  |  |  |  |
| S07AL09203C0 |  | SW-07 ; Partitions 1st face (Ambulatory Lounge) | 75d | 2011-06-08 A | 2011-11-21 | S07AL09201C0 | 65% | 26.25d | 2011-09-03 | 2011-12-05 | 47.5d | 0d | PARTITIONS [619 m]; PARTITIONS [4594 h]; Cost |  |  | S07AL09203C0 | SW | C | 07 | AL | PT | 092 | 03 | BILL 9 | B09 | S2 | 2F | R00 | ACF06 | 092 | 0 | 0 | 0 | 0 | 314 | 945 | 22818.32 | 60 | 30 | 65 | GP | P1F |  |  |  |  |  |  |  |  |  |  |  |  |
| S07AL21111C0 |  | SW-07 ; 1st Fix, Inst of Sprinkler main pipe (Ambulatory Lounge) | 66d | 2011-06-08 A | 2011-10-31 | S07AL23001C0 SS | 60% | 26.4d | 2011-09-18 | 2011-12-08 | 67.12d | 6.3d | MECHANICAL [793.2 h]; Cost [43268 AED] | 43,267.97 | 25,960.78 | S07AL21111C0 | SW | C | 07 | AL | ME | 211 | 11 | BILL 9 | B09 | S2 | 1F | R00 | ACF04 | 211 | 0 | 0 | 0 | 0 |  |  | 10041.79 | 30 | 20 | 40 | MEP | M1F | 25 | 1S |  |  |  |  |  |  |  |  |  |  |
| S07AL22019C0 |  | SW-07 ; 1st Fix, Inst of Drainage pipe (ceiling) (Ambulatory Lounge) | 120d | 2011-06-08 A | 2011-10-20 | S07AL23001C0 SS | 85% | 18d | 2011-08-21 | 2012-01-16 | 71.92d | 6.3d | PLUMBING [310.8 h]; Cost [16770.4 AED] | 16,770.39 | 14,254.83 | S07AL22019C0 | SW | C | 07 | AL | ME | 220 | 19 | BILL 9 | B09 | S2 | 1F | R00 | ACF04 | 220 | 0 | 0 | 0 | 0 |  |  | 5833.87 | 80 | 10 | 85 | MEP | M1F | 40 | 1S |  |  |  |  |  |  |  |  |  |  |
| S07AL23001C0 |  | SW-07 ; 1st Fix, Inst. of Supports for MEP (Ambulatory Lounge) | 42d | 2011-06-08 A | 2011-10-08 | S07S107807C0, S07S207807C0 | 85% | 6.3d | 2011-06-08 | 2011-07-27 | 47.5d | 0d | MECHANICAL [536.4 h]; Cost [30275.7 AED] | 30,275.67 | 25,734.32 | S07AL23001C0 | SW | C | 07 | AL | ME | 230 | 01 | BILL 9 | B09 | S2 | 1F | R00 | ACF04 | 230 |  |  |  |  |  |  | 10535.94 |  |  | 85 | MEP | M1F | 45 | 1S |  |  |  |  |  |  |  |  |  |  |
| S07AL09201C0 |  | SW-07 ; Metal Studs (Ambulatory Lounge) | 75d | 2011-06-09 A | 2011-10-17 | S07AL23001C0 SS | 80% | 15d | 2011-08-17 | 2011-11-19 | 47.5d | 0d | PARTITIONS [5889 h]; PARTITIONS - Metal Studs [619 m]; Cost |  |  | S07AL09201C0 | SW | C | 07 | AL | PT | 092 | 01 | BILL 9 | B09 | S2 | 1F | R00 | ACF06 | 092 | 0 | 0 | 0 | 0 | 313 | 944 | 162988.01 | 75 | 70 | 80 | GP | PMS |  |  |  |  |  |  |  |  |  |  |  |  |
| S07AL21117C0 |  | SW-07 ; 1st Fix, Inst of Sprinkler branch pipe (Ambulatory Lounge) | 66d | 2011-07-10 A | 2011-11-21 | S07AL09201C0 | 60% | 26.4d | 2011-11-17 | 2012-02-07 | 151.72d | 99.6d | MECHANICAL [682.8 h]; Cost [37306.8 AED] | 37,306.8 | 22,384.08 | S07AL21117C0 | SW | C | 07 | AL | ME | 211 | 17 | BILL 9 | B09 | S2 | 1F | R00 | ACF04 | 211 | 0 | 0 | 0 | 0 |  |  |  | 30 | 20 | 40 | MEP | M1F |  | 1S |  |  |  |  |  |  |  |  |  |  |
| S07AL23017C0 |  | SW-07 ; 1st Fix, Inst of CHW pipe (Ambulatory Lounge) | 60d | 2011-07-10 A | 2011-11-21 | S07AL23001C0 SS | 30% | 42d | 2011-10-02 | 2011-12-17 | 63.23d | 0d | MECHANICAL [1687.2 h]; Cost [92145.2 AED] | 92,145.18 | 27,643.55 | S07AL23017C0 | SW | C | 07 | AL | ME | 230 | 17 | BILL 9 | B09 | S2 | 1F | R00 | ACF04 | 230 | 0 | 0 | 0 | 0 |  |  |  |  |  |  | MEP | M1F | 10 | 1S |  |  |  |  |  |  |  |  |  |  |
| S07AL26009C0 |  | SW-07 ; 2nd Fix, Inst of Wall conduites (Ambulatory Lounge) | 42d | 2011-07-10 A | 2011-12-06 | S07AL09201C0 | 10% | 37.8d | 2011-08-02 | 2011-09-22 | 56.33d | 4.2d | ELECTRICAL [868.8 h]; Cost [24105.1 AED] | 24,105.11 | 2,410.51 | S07AL26009C0 | SW | C | 07 | AL | ME | 260 | 09 | BILL 9 | B09 | S2 | 2F | R00 | ACF07 | 260 |  |  |  |  |  |  |  |  |  |  | MEP |  | 10 | 2n |  |  |  |  |  |  |  |  |  |  |
| S07AL26013C0 |  | SW-07 ; 1st Fix, Inst of Cable Tray (Ambulatory Lounge) | 60d | 2011-07-10 A | 2011-10-06 | S07AL23001C0 SS, S07S107807C0, S07S207807C0 | 90% | 6d | 2011-09-01 | 2011-11-14 | 139.12d | 6.9d | ELECTRICAL [231.6 h]; Cost [13047.4 AED] | 13,047.37 | 11,742.63 | S07AL26013C0 | SW | C | 07 | AL | ME | 260 | 13 | BILL 9 | B09 | S2 | 1F | R00 | ACF04 | 260 | 0 | 0 | 0 | 0 |  |  | 1514.5 |  |  |  | MEP | M1F | 45 | 1S |  |  |  |  |  |  |  |  |  |  |
| S07AL27010C0 |  | SW-07 ; 1st Fix, Inst of Trunking for ELV system (Ambulatory Lounge) | 66d | 2011-07-10 A | 2011-10-08 | S07AL23001C0 SS, S07S107807C0, S07S207807C0 | 90% | 6.6d | 2011-08-18 | 2011-11-09 | 138.53d | 6.3d | ELECTRICAL [991.2 h]; Cost [51056.8 AED] | 51,056.81 | 45,951.13 | S07AL27010C0 | SW | C | 07 | AL | ME | 270 | 10 | BILL 9 | B09 | S2 | 1F | R00 | ACF04 | 270 | 0 | 0 | 0 | 0 |  |  | 6031.32 | 30 | 25 |  | MEP | M1F | 10 | 1S |  |  |  |  |  |  |  |  |  |  |
| S07AL23023C0 |  | SW-07 ; 1st Fix, Inst of Main Ducting (Ambulatory Lounge) | 63d | 2011-08-10 A | 2011-11-09 | S07AL23001C0 SS | 50% | 31.5d | 2011-10-04 | 2011-12-22 | 113.62d | 0d | MECHANICAL [6650.4 h]; Cost [363211 AED] | 363,210.66 | 181,605.33 | S07AL23023C0 | SW | C | 07 | AL | ME | 230 | 23 | BILL 9 | B09 | S2 | 1F | R00 | ACF04 | 230 | 0 | 0 | 0 | 0 |  |  |  | 10 | 0 | 20 | MEP | M1F | 25 | 1S |  |  |  |  |  |  |  |  |  |  |
| S07AL26001C0 |  | SW-07 ; 1st Fix, Inst of Trunking/Conduiting (Ambulatory Lounge) | 66d | 2011-08-10 A | 2011-10-15 | S07AL23001C0, S07S107807C0, S07S207807C0 | 90% | 6.6d | 2011-09-04 | 2011-11-23 | 132.22d | 0d | ELECTRICAL [447.6 h]; Cost [24105.1 AED] | 24,105.11 | 21,694.6 | S07AL26001C0 | SW | C | 07 | AL | ME | 260 | 01 | BILL 9 | B09 | S2 | 1F | R00 | ACF04 | 260 | 0 | 0 | 0 | 0 |  |  |  | 30 | 0 |  | MEP | M1F | 10 | 1S |  |  |  |  |  |  |  |  |  |  |
| S07AL22005C0 |  | SW-07 ; 1st Fix, Inst of Water supply pipe (ceiling) (Ambulatory Lounge) | 54d | 2011-09-05 A | 2011-12-01 | S07AL22019C0 SS+10d, S07AL23001C0 | 20% | 43.2d | 2011-10-23 | 2011-12-31 | 65.62d | 13.5d | PLUMBING [1688.4 h]; Cost [162261 AED] | 162,261.32 | 32,452.26 | S07AL22005C0 | SW | C | 07 | AL | ME | 220 | 05 | BILL 9 | B09 | S2 | 1F | R00 | ACF04 | 220 |  |  |  |  |  |  |  |  |  | 20 | MEP | M1F |  | 1S |  |  |  |  |  |  |  |  |  |  |
| S07AL23009C0 |  | SW-07 ; 2nd Fix, Inst of VAV'S CHW connection (Ambulatory Lounge) | 42d | 2011-09-05 A | 2012-01-10 | S07AL23017C0 | 5% | 39.9d | 2011-11-01 | 2011-12-25 | 63.23d | 0d | MECHANICAL [1836 h]; Cost [55043.4 AED] | 55,043.41 | 2,752.17 | S07AL23009C0 | SW | C | 07 | AL | ME | 230 | 09 | BILL 9 | B09 | S2 | 2F | R00 | ACF07 | 230 |  |  |  |  |  |  |  |  |  |  | MEP |  |  | 2n |  |  |  |  |  |  |  |  |  |  |
| S07AL22007C0 |  | SW-07 ; 1st Fix, Inst of Medical Gas pipe (Ambulatory Lounge) | 48d | 2011-10-08 | 2011-12-08 | S07AL21111C0 SS+6d, S07AL23001C0 |  |  |  |  | 60.83d | 8.7d | PLUMBING [187.2 h]; Cost |  |  | S07AL22007C0 | SW | C | 07 | AL | ME | 220 | 07 | BILL 9 | B09 | S2 | 1F | R00 | ACF04 | 220 |  |  |  |  |  |  |  |  |  |  | MEP | M1F |  | 1S |  |  |  |  |  |  |  |  |  |  |
| S07AL27001C0 |  | SW-07 ; 1st Fix, Wiring/ Cabling work (Ambulatory Lounge) | 48d | 2011-10-15 | 2011-12-15 | S07AL26001C0, S07AL26013C0, S07AL27010C0 |  |  |  |  | 132.22d | 80.1d | ELECTRICAL [241.2 h]; Cost |  |  | S07AL27001C0 | SW | C | 07 | AL | ME | 270 | 01 | BILL 9 | B09 | S2 | 1F | R00 | ACF04 | 270 |  |  |  |  |  |  |  |  |  |  | MEP | M1F |  | 1S |  |  |  |  |  |  |  |  |  |  |
| S07AL22011C0 |  | SW-07 ; 2nd Fix, Drainage/Water pipe (wall) (Ambulatory Lounge) | 42d | 2011-10-18 | 2011-12-11 | S07AL09201C0 |  |  |  |  | 52.12d | 0d | PLUMBING [588 h]; Cost |  |  | S07AL22011C0 | SW | C | 07 | AL | ME | 220 | 11 | BILL 9 | B09 | S2 | 2F | R00 | ACF07 | 220 |  |  |  |  |  |  |  |  |  |  | MEP |  |  | 2n |  |  |  |  |  |  |  |  |  |  |
| S07AL22015C0 |  | SW-07 ; 2nd Fix, Medical Gas pipe (Ambulatory Lounge) | 42d | 2011-10-18 | 2011-12-11 | S07AL09201C0, S07AL22007C0 SS |  |  |  |  | 52.12d | 0d | PLUMBING [465.6 h]; Cost |  |  | S07AL22015C0 | SW | C | 07 | AL | ME | 220 | 15 | BILL 9 | B09 | S2 | 2F | R00 | ACF07 | 220 |  |  |  |  |  |  |  |  |  |  | MEP |  |  | 2n |  |  |  |  |  |  |  |  |  |  |
| S07AL40302C0 |  | SW-07 ; 2nd Fix, Pneumatic tube (Ambulatory Lounge) | 42d | 2011-10-18 | 2011-12-11 | S07AL09201C0 |  |  |  |  | 52.12d | 0d | MECHANICAL [1170 h]; Cost |  |  | S07AL40302C0 | SW | C | 07 | AL | ME | 403 | 02 | BILL 9 | B09 | S2 | 2F | R00 | ACF07 | 403 |  |  |  |  |  |  |  |  |  |  | MEP |  |  | 2n |  |  |  |  |  |  |  |  |  |  |
| S07AL23008C0 |  | SW-07 ; 1st Fix, Inst of VCD's/FD's (Ambulatory Lounge) | 48d | 2011-11-09 | 2012-01-08 | S07AL23023C0 |  |  |  |  | 113.62d | 61.5d | MECHANICAL [1111.2 h]; Cost |  |  | S07AL23008C0 | SW | C | 07 | AL | ME | 230 | 08 | BILL 9 | B09 | S2 | 1F | R00 | ACF04 | 230 |  |  |  |  |  |  |  |  |  |  | MEP | M1F |  | 1S |  |  |  |  |  |  |  |  |  |  |
| S07AL08103C0 |  | SW-07 ; Door Frames (Ambulatory Lounge) | 36d | 2011-11-30 | 2012-01-12 | S07AL09201C0, GNHE08101C0 FS+69d, S06PA08103C0 SS+3d |  |  |  |  | 35.5d | 0d | ASSORTED DOORS [234 h]; Cost |  |  | S07AL08103C0 | SW | C | 07 | AL | DO | 081 | 03 | BILL 9 | B09 | S2 | DF | R00 | ACF06 | 081 |  |  |  |  | 316 | 947 |  |  |  |  |  |  |  |  | 08 |  |  |  |  |  |  |  |  |  |
| S07AL01005C0 |  | SW-07 ; 2nd, Wall Inspection by Consultant (Ambulatory Lounge) | 6d | 2011-12-12 | 2011-12-18 | S07AL22011C0, S07AL22015C0, S07AL26009C0, S07AL40302C0 |  |  |  |  | 52.12d | 0d | Labor General [0.6 h]; Cost |  |  | S07AL01005C0 | SW | C | 07 | AL | ME | 010 | 05 | BILL 9 | B09 | S2 | WI | R00 | ACF07 | 010 |  |  |  |  |  |  |  |  |  |  | MEP |  |  | 2n |  |  |  |  |  |  |  |  |  |  |
| S07AL09205C0 |  | SW-07 ; Partitions Closing (Ambulatory Lounge) | 48d | 2011-12-19 | 2012-02-14 | S07AL01005C0, S07AL09203C0, S07AL22005C0, S07AL22019C0, SAFOA09212C1 FF, S07AL08103C0 FF, SAFCI22001R20 FS+65d |  |  |  |  | 52.12d | 0d | PARTITIONS [619 m]; PARTITIONS [5895 h]; Cost |  |  | S07AL09205C0 | SW | C | 07 | AL | PT | 092 | 05 | BILL 9 | B09 | S2 | FF | R00 | ACF06 | 092 |  |  |  |  | 315 | 946 |  |  |  |  | GP | P2F |  |  |  |  |  |  |  |  |  |  |  |  |
| S07AL05101C10 |  | SW-07 ; Secondary Steel for Medical Equipment (Ambulatory Lounge) | 9.88d | 2011-12-31 | 2012-01-11 | S07S107807C0, S07S207807C0, S07S307807C0, SAFCI22001R02 FS+58d |  |  |  |  | 98.25d | 0d | STRUCTURAL STEEL [14 T(Fe)]; Cost |  |  | DP1S205101C0 | SW | C | 07 | AL | SW | 055 | 01 | BILL 9 | B09 | S2 | 03 | R00 | ACF03 | 055 |  |  |  |  |  |  |  |  |  |  |  |  |  |  |  | 4012589 | Z2 | DT | P03 | O | A3 | EREC | 1FLR |  |
| S07AL23015C0 |  | SW-07 ; 2nd Fix, Insulation of CHW pipe & Duct (Ambulatory Lounge) | 48d | 2012-01-10 | 2012-03-07 | S07AL23009C0, S07AL23017C0, S07AL23023C0 |  |  |  |  | 63.23d | 11.1d | MECHANICAL [4532.4 h]; Cost |  |  | S07AL23015C0 | SW | C | 07 | AL | ME | 230 | 15 | BILL 9 | B09 | S2 | 2F | R00 | ACF07 | 230 |  |  |  |  |  |  |  |  |  |  | MEP |  |  | 2n |  |  |  |  |  |  |  |  |  |  |
| S07AL07103C0 |  | SW-07 ; Waterproofing (Ambulatory Lounge) | 12d | 2012-02-15 | 2012-02-28 | S07AL08103C0, S07AL09205C0 |  |  |  |  | 100.12d | 0d | THERMAL & MOISTURE [272 h]; THERMAL & MOISTURE [1780 m2]; Cost |  |  | S07AL07103C0 | SW | C | 07 | AL | FF | 071 | 03 | BILL 9 | B09 | S2 | 01 | R00 | ACF03 | 071 |  |  |  |  | 105 | 999 |  |  |  |  |  |  |  |  |  |  |  |  |  |  |  |  |  |  |
| S07AL09901C0 |  | SW-07 ; Wall Prime & 1st coat (Ambulatory Lounge) | 30d | 2012-02-15 | 2012-03-20 | S07AL09205C0 |  |  |  |  | 52.12d | 0d | WALL PAINT [965 h]; WALL PAINT [1204 m2]; Cost |  |  | S07AL09901C0 | SW | C | 07 | AL | PA | 099 | 01 | BILL 9 | B09 | S2 | 01 | R00 | ACF06 | 099 |  |  |  |  | 328 | 956 |  |  |  |  |  |  |  |  |  |  |  |  |  |  |  |  |  |  |
| S07AL26005C0 |  | SW-07 ; 2nd Fix, Wiring for Power/Lighting/Emergency (Ambulatory Lounge) | 42d | 2012-02-15 | 2012-04-03 | S07AL09205C0 |  |  |  |  | 142.12d | 0d | ELECTRICAL [661.2 h]; Cost |  |  | S07AL26005C0 | SW | C | 07 | AL | ME | 260 | 05 | BILL 9 | B09 | S2 | 2F | R00 | ACF07 | 260 |  |  |  |  |  |  |  |  |  |  | MEP |  |  | 2n |  |  |  |  |  |  |  |  |  |  |
| S07AL26007C0 |  | SW-07 ; 2nd Fix, Cable Pulling (Ambulatory Lounge) | 42d | 2012-02-15 | 2012-04-03 | S07AL09201C0 SS+6d, S07AL09205C0 |  |  |  |  | 184.12d | 147d | ELECTRICAL [1953.6 h]; Cost |  |  | S07AL26007C0 | SW | C | 07 | AL | ME | 260 | 07 | BILL 9 | B09 | S2 | 2F | R00 | ACF07 | 260 |  |  |  |  |  |  |  |  |  |  | MEP |  |  | 2n |  |  |  |  |  |  |  |  |  |  |
| S07AL26011C0 |  | SW-07 ; 2nd Fix, Inst of Equipment (DB) (Ambulatory Lounge) | 48d | 2012-02-15 | 2012-04-10 | S07AL09205C0 |  |  |  |  | 124.12d | 72d | ELECTRICAL [746.4 h]; Cost |  |  | S07AL26011C0 | SW | C | 07 | AL | ME | 260 | 11 | BILL 9 | B09 | S2 | 2F | R00 | ACF04 | 260 |  |  |  |  |  |  |  |  |  |  | MEP |  |  | 2n |  |  |  |  |  |  |  |  |  | E |
| S07AL26053C0 |  | SW-07 ; 2nd Fix, Wiring / Cabling (Ambulatory Lounge) | 42d | 2012-02-15 | 2012-04-03 | S07AL09203C0, S07AL09205C0 |  |  |  |  | 76.12d | 24d | ELECTRICAL [661.2 h]; Cost |  |  | S07AL26053C0 | SW | C | 07 | AL | ME | 260 | 53 | BILL 9 | B09 | S2 | 2F | R00 | ACF07 | 260 |  |  |  |  | 389 | 977 |  |  |  |  | MEP |  |  | 2n |  |  |  |  |  |  |  |  |  |  |
| S07AL09305C0 |  | SW-07 ; CeramSW floor tile (Ambulatory Lounge) | 42d | 2012-02-29 | 2012-04-17 | S07AL07103C0 |  |  |  |  | 100.12d | 0d | CERAMIC FLOOR TILES [336 h]; CERAMIC FLOOR TILES [187 m2]; Cost |  |  | S07AL09305C0 | SW | C | 07 | AL | FF | 093 | 05 | BILL 9 | B09 | S2 | 02 | R00 | ACF06 | CT |  |  |  |  | 106 | 1000 |  |  |  |  |  |  |  |  |  |  |  |  |  |  |  |  |  |  |
| S07AL05501C0 |  | SW-07 ; Handrails & balustrade (Ambulatory Lounge) | 36d | 2012-03-21 | 2012-05-01 | S07AL09901C0 |  |  |  |  | 64.12d | 0d | SECONDARY STEEL [249 h]; Cost |  |  | S07AL05501C0 | SW | C | 07 | AL | SW | 055 | 01 | BILL 9 | B09 | S2 | 01 | R00 | ACF03 | a |  |  |  |  |  |  |  |  |  |  |  |  |  |  |  |  |  |  |  |  |  |  |  |  |
| S07AL09501C0 |  | SW-07 ; Ceiling Grid and Service Tile (Ambulatory Lounge) | 36d | 2012-03-21 | 2012-05-01 | S07AL05101C10, S07AL09205C0 SS+15d, S07AL21117C0, S07AL23008C0, S07AL23009C0, S07AL23015C0, S07AL27001C0, SAFCI22002R02 FS+65d, S07AL26053C0 FF, S07AL21111C0, S07AL09901C0, SV09GZ04052R2 |  |  |  |  | 52.12d | 0d | CEILING GRID FOR GYPSUM [1022.7 h]; CEILING GRID FOR GYPSUM [87.33 m2]; Cost |  |  | S07AL09501C0 | SW | C | 07 | AL | CE | 095 | 01 | BILL 9 | B09 | S2 | 01 | R00 | ACF06 | 095 |  |  |  |  | 323 | 952 |  |  |  |  |  |  |  |  |  |  |  |  |  |  |  |  |  |  |
| S07AL40303C0 |  | SW-07 ; Final Fix, Pneumatic tube (Ambulatory Lounge) | 36d | 2012-03-21 | 2012-05-01 | S07AL09901C0 |  |  |  |  | 204d | 166.88d | MECHANICAL [1036.8 h]; Cost |  |  | S07AL40303C0 | SW | C | 07 | AL | ME | 403 | 03 | BILL 9 | B09 | S2 | FF | R00 | ACF07 | 403 |  |  |  |  |  |  |  |  |  |  | MEP |  |  | FF |  |  |  |  |  |  |  |  |  |  |
| S07AL26015C0 |  | SW-07 ; Final Fix, Termination & Gladding of Cables (Ambulatory Lounge) | 36d | 2012-04-04 | 2012-05-15 | S07AL26005C0 |  |  |  |  | 142.12d | 66d | ELECTRICAL [85.2 h]; Cost |  |  | S07AL26015C0 | SW | C | 07 | AL | ME | 260 | 15 | BILL 9 | B09 | S2 | FF | R00 | ACF07 | 260 |  |  |  |  |  |  |  |  |  |  | MEP |  |  | FF |  |  |  |  |  |  |  |  |  |  |
| S07AL22025C0 |  | SW-07 ; Final Fix, Inst of Sanitary Ware (Ambulatory Lounge) | 36d | 2012-04-18 | 2012-05-29 | S07AL09205C0, S07AL09305C0, A10230 FS+148d |  |  |  |  | 100.12d | 0d | PLUMBING [1246.8 h]; Cost |  |  | S07AL22025C0 | SW | C | 07 | AL | ME | 220 | 25 | BILL 9 | B09 | S2 | FF | R00 | ACF07 | 220 |  |  |  |  |  |  |  |  |  |  | MEP |  |  | FF |  |  |  |  |  |  |  |  |  |  |
| S07AL09601C0 |  | SW-07 ; Flooring (Rubber & etc) (Ambulatory Lounge) | 42d | 2012-05-02 | 2012-06-20 | S07AL09901C0, S07AL09501C0, S07AL05501C0 |  |  |  |  | 64.12d | 0d | RUBBER FLOOR [216 h]; RUBBER FLOOR [530 m2]; Cost |  |  | S07AL09601C0 | SW | C | 07 | AL | FF | 096 | 01 | BILL 9 | B09 | S2 | 03 | R00 | ACF06 | RF |  |  |  |  | 326 | 955 |  |  |  |  |  |  |  |  |  |  |  |  |  |  |  |  |  |  |
| S07AL09602C0 |  | SW-07 ; Flooring (Stone) (Ambulatory Lounge) | 42d | 2012-05-02 | 2012-06-20 | S07AL09901C0, S07AL09501C0 |  |  |  |  | 52.12d | 0d | STONE FLOOR [264 h]; STONE FLOOR [292 m2]; Cost |  |  | S07AL09601C0 | SW | C | 07 | AL | FF | 096 | 01 | BILL 9 | B09 | S2 | 09 | R00 | ACF06 | ST |  |  |  |  | 326 | 955 |  |  |  |  |  |  |  |  |  |  |  |  |  |  |  |  |  |  |
| S07AL09905C0 |  | SW-07 ; Ceiling Prime & 1st coat (Ambulatory Lounge) | 30d | 2012-05-02 | 2012-06-05 | S07AL09501C0 |  |  |  |  | 156d | 0d | CEILING PAINT [60 h]; CEILING PAINT [74 m2]; Cost |  |  | S07AL09905C0 | SW | C | 07 | AL | PA | 099 | 05 | BILL 9 | B09 | S2 | 01 | R00 | ACF06 | 099 |  |  |  |  | 330 | 958 |  |  |  |  |  |  |  |  |  |  |  |  |  |  |  |  |  |  |
| S07AL21115C0 |  | SW-07 ; 2nd Fix, Inst of Sprinkler droppers (Ambulatory Lounge) | 42d | 2012-05-02 | 2012-06-20 | S07AL09501C0 |  |  |  |  | 76.12d | 0d | MECHANICAL [1682.4 h]; Cost |  |  | S07AL21115C0 | SW | C | 07 | AL | ME | 211 | 15 | BILL 9 | B09 | S2 | 2F | R00 | ACF07 | 211 |  |  |  |  |  |  |  |  |  |  | MEP |  |  | 2n |  |  |  |  |  |  |  |  |  |  |
| S07AL23021C0 |  | SW-07 ; 2nd Fix, Inst of Flexible Duct & Plenum boxes (Ambulatory Lounge) | 42d | 2012-05-02 | 2012-06-20 | S07AL09205C0, S07AL09501C0 |  |  |  |  | 76.12d | 0d | MECHANICAL [982.8 h]; Cost |  |  | S07AL23021C0 | SW | C | 07 | AL | ME | 230 | 21 | BILL 9 | B09 | S2 | 2F | R00 | ACF07 | 230 |  |  |  |  |  |  |  |  |  |  | MEP |  |  | 2n |  |  |  |  |  |  |  |  |  |  |
| S07AL26017C0 |  | SW-07 ; Final Fix, Inst of Ceiling rose (Ambulatory Lounge) | 36d | 2012-05-02 | 2012-06-12 | S07AL09501C0 |  |  |  |  | 76.12d | 0d | ELECTRICAL [36 h]; Cost |  |  | S07AL26017C0 | SW | C | 07 | AL | ME | 260 | 17 | BILL 9 | B09 | S2 | FF | R00 | ACF07 | 260 |  |  |  |  |  |  |  |  |  |  | MEP |  |  | FF |  |  |  |  |  |  |  |  |  |  |
| S07AL27002C0 |  | SW-07 ; 2nd Fix, Wiring Droppers (Ambulatory Lounge) | 42d | 2012-05-02 | 2012-06-20 | S07AL09501C0 |  |  |  |  | 76.12d | 0d | ELECTRICAL [661.2 h]; Cost |  |  | S07AL27002C0 | SW | C | 07 | AL | ME | 270 | 02 | BILL 9 | B09 | S2 | 2F | R00 | ACF07 | 270 |  |  |  |  |  |  |  |  |  |  | MEP |  |  | 2n |  |  |  |  |  |  |  |  |  |  |
| S07AL27020C0 |  | SW-07 ; 2nd Fix, Inst of ELV Equipment (Panels) (Ambulatory Lounge) | 54d | 2012-05-02 | 2012-07-04 | S07AL09205C0, S07AL09501C0 |  |  |  |  | 52.12d | 0d | ELECTRICAL [2151.6 h]; Cost |  |  | S07AL27020C0 | SW | C | 07 | AL | ME | 270 | 20 | BILL 9 | B09 | S2 | 2F | R00 | ACF04 | 270 |  |  |  |  |  |  |  |  |  |  | MEP |  |  | 2n |  |  |  |  |  |  |  |  |  | E |
| S07P109510C0 |  | SW-07 ; Patient Lift Ceiling Rail (by others) (PAT RM-1) | 30d | 2012-05-02 | 2012-06-05 | S07AL09501C0 |  |  |  |  | 130.12d | 93d | Labor General [0.1 h]; Cost |  |  | I06P109501C0 | SW | C | 07 | P1 | CE | 095 | 10 | BILL 9 | B09 | S2 | 02 | R00 | ACF06 | 095 |  |  |  |  | 323 | 952 |  |  |  |  |  |  |  |  |  |  |  |  |  |  |  |  |  |  |
| S07AL22021C0 |  | SW-07 ; Final Fix, Terminate Sanitary Ware & Appliances (Ambulatory Lounge) | 36d | 2012-05-30 | 2012-07-11 | S07AL22011C0, S07AL22025C0 |  |  |  |  | 100.12d | 63d | PLUMBING [1246.8 h]; Cost |  |  | S07AL22021C0 | SW | C | 07 | AL | ME | 220 | 21 | BILL 9 | B09 | S2 | FF | R00 | ACF07 | 220 |  |  |  |  |  |  |  |  |  |  | MEP |  |  | FF |  |  |  |  |  |  |  |  |  |  |
| S07AL09903C0 |  | SW-07 ; Wall Final Paint (Ambulatory Lounge) | 30d | 2012-06-06 | 2012-07-11 | S07AL09901C0, S07AL09905C0 |  |  |  |  | 156d | 78d | WALL PAINT [520 h]; WALL PAINT [648 m2]; Cost |  |  | S07AL09903C0 | SW | C | 07 | AL | PA | 099 | 03 | BILL 9 | B09 | S2 | 02 | R00 | ACF06 | 099 |  |  |  |  | 329 | 957 |  |  |  |  |  |  |  |  |  |  |  |  |  |  |  |  |  |  |
| S07AL26003C0 |  | SW-07 ; Final Fix, Inst of Light fittings (Ambulatory Lounge) | 42d | 2012-06-13 | 2012-08-01 | S07AL09501C0, S07AL26017C0 |  |  |  |  | 76.12d | 0d | ELECTRICAL [4813.2 h]; Cost |  |  | S07AL26003C0 | SW | C | 07 | AL | ME | 260 | 03 | BILL 9 | B09 | S2 | FF | R00 | ACF07 | 260 |  |  |  |  |  |  |  |  |  |  | MEP |  |  | FF |  |  |  |  |  |  |  |  |  |  |
| S07AL08107C0 |  | SW-07 ; Doors (Ambulatory Lounge) | 36d | 2012-06-21 | 2012-08-01 | S07AL08103C0, S07AL09901C0, S07AL09601C0, S07AL09602C0 |  |  |  |  | 108.25d | 0d | ASSORTED DOORS [570 h]; ASSORTED DOORS [57 no]; Cost |  |  | S07AL08107C0 | SW | C | 07 | AL | DO | 081 | 07 | BILL 9 | B09 | S2 | DR | R00 | ACF06 | 081 |  |  |  |  | 317 | 948 |  |  |  |  |  |  |  |  | 08 |  |  |  |  |  |  |  |  |  |
| S07AL21113C0 |  | SW-07 ; Final Fix, Inst of Sprinklers head/ Extinguisher (Ambulatory Lounge) | 36d | 2012-06-21 | 2012-08-01 | S07AL09501C0, S07AL21115C0 |  |  |  |  | 76.12d | 0d | MECHANICAL [237.6 h]; Cost |  |  | S07AL21113C0 | SW | C | 07 | AL | ME | 211 | 13 | BILL 9 | B09 | S2 | FF | R00 | ACF07 | 211 |  |  |  |  |  |  |  |  |  |  | MEP |  |  | FF |  |  |  |  |  |  |  |  |  |  |
| S07AL23019C0 |  | SW-07 ; Final Fix, Inst of Grilles & Diffusers (Ambulatory Lounge) | 36d | 2012-06-21 | 2012-08-01 | S07AL09501C0, S07AL23021C0 |  |  |  |  | 76.12d | 0d | MECHANICAL [835.2 h]; Cost |  |  | S07AL23019C0 | SW | C | 07 | AL | ME | 230 | 19 | BILL 9 | B09 | S2 | FF | R00 | ACF07 | 230 |  |  |  |  |  |  |  |  |  |  | MEP |  |  | FF |  |  |  |  |  |  |  |  |  |  |
| S07AL27030C0 |  | SW-07 ; Final Fix, Inst of ELV devise (Detector/Speaker) (Ambulatory Lounge) | 36d | 2012-06-21 | 2012-08-01 | S07AL09501C0, S07AL27002C0 |  |  |  |  | 76.12d | 0d | ELECTRICAL [1348.8 h]; Cost |  |  | S07AL27030C0 | SW | C | 07 | AL | ME | 270 | 30 | BILL 9 | B09 | S2 | FF | R00 | ACF07 | 270 |  |  |  |  |  |  |  |  |  |  | MEP |  |  | FF |  |  |  |  |  |  |  |  |  |  |
| S07AL09701C0 |  | SW-07 ; Wall finishes (ST, WD, WC) (Ambulatory Lounge) | 54d | 2012-07-05 | 2012-09-08 | S07AL26011C0, S07AL27020C0, SAFCI22002R02 FS+164d, S07AL09602C0, S07AL09601C0 |  |  |  |  | 52.12d | 0d | ASSORTED WALL FINISH [1073 h]; ASSORTED WALL FINISH [1234 m2]; Cost |  |  | S07AL09701C0 | SW | C | 07 | AL | WF | 097 | 01 | BILL 9 | B09 | S2 | 01 | R00 | ACF06 | 097 |  |  |  |  | 105 | 1002 |  |  |  |  |  |  |  |  |  |  |  |  |  |  |  |  |  |  |
| S07AL06101C0 |  | SW-07 ; Wood / caseworks (Ambulatory Lounge) | 66d | 2012-07-09 | 2012-09-25 | S07AL09501C0, S07AL09901C0, S07CO04406C0, SAFWA00105M0, SAFCI22002R02 FS+184d, S07AL09602C0 |  |  |  |  | 37.12d | 0d | WOOD WORK/CASEWORK [131.48 no]; WOOD WORK/CASEWORK [4902 h]; Cost |  |  | S07AL06101C0 | SW | C | 07 | AL | WO | 061 | 01 | BILL 9 | B09 | S2 | WW | R00 | ACF06 | 061 |  |  |  |  | 332 | 960 |  |  |  |  |  |  |  |  |  |  |  |  |  |  |  |  |  |  |
| S07AL01006C0 |  | SW-07 ; 2nd, Ceiling Inspection by Consultants (Ambulatory Lounge) | 6d | 2012-08-02 | 2012-08-08 | S07AL21115C0, S07AL23009C0, S07AL23015C0, S07AL27002C0, S07AL09501C0, S07AL21113C0, S07AL23019C0, S07AL26003C0, S07AL26017C0, S07AL27030C0, S07AL26015C0 |  |  |  |  | 76.12d | 39d | Labor General [0.6 h]; Cost |  |  | S07AL01006C0 | SW | C | 07 | AL | ME | 010 | 06 | BILL 9 | B09 | S2 | CI | R00 | ACF07 | 010 |  |  |  |  |  |  |  |  |  |  | MEP |  |  | 2n |  |  |  |  |  |  |  |  |  |  |
| S07AL08709C0 |  | SW-07 ; Ironmongery (Ambulatory Lounge) | 29.75d | 2012-08-02 | 2012-09-08 | S07AL08107C0 |  |  |  |  | 108.25d | 71.12d | IRONMONGERY [500 h]; IRONMONGERY [50 no]; Cost |  |  | S07AL08709C0 | SW | C | 07 | AL | DO | 087 | 09 | BILL 9 | B09 | S2 | IM | R00 | ACF06 | 087 |  |  |  |  | 322 | 951 |  |  |  |  |  |  |  |  | 08 |  |  |  |  |  |  |  |  |  |
| S07AL11001C0 |  | SW-07 ; Wall Protection (WP, CG, WG, FCG) (Ambulatory Lounge) | 24d | 2012-09-09 | 2012-10-06 | S07AL09701C0, S07AL09903C0 SS |  |  |  |  | 84d | 46.88d | Labor General [2 h]; Cost |  |  | S07AL11001C0 | SW | C | 07 | AL | WF | 110 | 01 | BILL 9 | B09 | S2 | 03 | R00 | ACF08 | b |  |  |  |  | 326 | 1001 |  |  |  |  |  |  |  |  |  |  |  |  |  |  |  |  |  |  |
| S07AL09503C0 |  | SW-07 ; Ceiling closure - ACT/Gypsum (Ambulatory Lounge) | 25.88d | 2012-09-26 | 2012-10-25 | S07AL01006C0, S07AL21115C0, S07AL26005C0, S07AL27001C0, S07AL27002C0, S07P109510C0, SAFOA09511C1 FF, S07AL06101C0, S07AL09701C0, S07AL23021C0, S07AL26007C0, S07AL22021C0 |  |  |  |  | 37.12d | 0d | ASSORTED CEILING FINISH [962.48 h]; CEILING GYPSUM [28.7 h]; ASSORTED CEILING FINISH [1565 m2]; CEILING GYPSUM [87 m2]; Cost |  |  | S07AL09503C0 | SW | C | 07 | AL | CE | 095 | 03 | BILL 9 | B09 | S2 | 02 | R00 | ACF06 | 095 |  |  |  |  | 324 | 953 |  |  |  |  |  |  |  |  |  |  |  |  |  |  |  |  |  |  |
| S07AL22029C0 |  | SW-07 ; Final Fix, Medical Gas pipe (Ambulatory Lounge) | 18d | 2012-09-26 | 2012-10-16 | S07AL09501C0, S07AL06101C0 |  |  |  |  | 63d | 25.88d | PLUMBING [187.2 h]; Cost |  |  | S07AL22029C0 | SW | C | 07 | AL | ME | 220 | 29 | BILL 9 | B09 | S2 | FF | R00 | ACF07 | 220 |  |  |  |  |  |  |  |  |  |  | MEP |  |  | FF |  |  |  |  |  |  |  |  |  |  |
| S07AL09907C0 |  | SW-07 ; Ceiling Final paint (Ambulatory Lounge) | 18d | 2012-10-25 | 2012-11-19 | S07AL09601C0, S07AL09905C0, S07AL09602C0, S07AL09503C0, S07AL09503C0 FF |  |  |  |  | 49.12d | 12d | CEILING PAINT [33 h]; CEILING PAINT [40 m2]; Cost |  |  | S07AL09907C0 | SW | C | 07 | AL | PA | 099 | 07 | BILL 9 | B09 | S2 | 02 | R00 | ACF06 | 099 |  |  |  |  | 331 | 959 |  |  |  |  |  |  |  |  |  |  |  |  |  |  |  |  |  |  |
| S07AL11003C0 |  | SW-07 ; FF & E (Ambulatory Lounge) | 18d | 2012-10-25 | 2012-11-19 | S07AL09601C0, S07AL09602C0, S07AL06101C0, S07AL09503C0 |  |  |  |  | 49.12d | 12d | FF&E [208 h]; FF&E [110.75 no]; Cost |  |  | S07AL11003C0 | SW | C | 07 | AL | WO | 110 | 03 | BILL 9 | B09 | S2 | FF&E | R00 | ACF08 | a |  |  |  |  | 333 | 961 |  |  |  |  |  |  |  |  |  |  |  |  |  |  |  |  |  |  |
| S07AL22027C0 |  | SW-07 ; Final Fix, Inst of All drain (Ambulatory Lounge) | 18d | 2012-10-25 | 2012-11-19 | S07AL09305C0, S07AL09503C0 |  |  |  |  | 37.12d | 0d | PLUMBING [310.8 h]; Cost |  |  | S07AL22027C0 | SW | C | 07 | AL | ME | 220 | 27 | BILL 9 | B09 | S2 | FF | R00 | ACF07 | 220 |  |  |  |  |  |  |  |  |  |  | MEP |  |  | FF |  |  |  |  |  |  |  |  |  |  |
| S07AL26019C0 |  | SW-07 ; Final Fix, Inst of Switch/Sockets (Ambulatory Lounge) | 18d | 2012-10-25 | 2012-11-19 | S07AL09901C0, S07AL09503C0 |  |  |  |  | 37.12d | 0d | ELECTRICAL [256.8 h]; Cost |  |  | S07AL26019C0 | SW | C | 07 | AL | ME | 260 | 19 | BILL 9 | B09 | S2 | FF | R00 | ACF07 | 260 |  |  |  |  |  |  |  |  |  |  | MEP |  |  | FF |  |  |  |  |  |  |  |  |  |  |

| ID | WBS | Activity | Duration | Start | Finish | Predecessors | Complete | Remaining | Planned start | Planned finish | Total float | Free float | Resources | Cost | Actual cost | change id | CCAD BUILDING(SET) | CCAD PHASE(SET) | CCAD FLOOR(SET) | CCAD ZONE(SET) | CCAD WORK(SET) | CCAD SECTION(SET) | CCAD SERIAL No.(SET) | CCAD CBS(SET) | CCAD BILL(SET) | CCAD HANDOVER(SET) | CCAD TAG(SET) | CCAD REV(SET) | CCADACF (SET) | CCAD SSCF | Change Order # | NEW ACTIVITY ID | P_811 | P_711 | U% | CCAD CSA | Act Selector % | CCAD SUB ZONE MEP(SET) | CCAD DIVISION(SET) | CCAD MEQ | IDDD |
| --- | --- | --- | --- | --- | --- | --- | --- | --- | --- | --- | --- | --- | --- | --- | --- | --- | --- | --- | --- | --- | --- | --- | --- | --- | --- | --- | --- | --- | --- | --- | --- | --- | --- | --- | --- | --- | --- | --- | --- | --- | --- |
|  | 10 | **Precommissioning Tesing & snagging (Ambulatory Lounge)** |  | 2012-11-19 | 2013-01-03 |  |  |  |  |  |  |  |  |  |  |  |  |  |  |  |  |  |  |  |  |  |  |  |  |  |  |  |  |  |  |  |  |  |  |  |  |
| S07TS01804C0 |  | SW-07 ; MEP de-snag, FIREM sign-off | 12d | 2012-11-19 | 2012-12-04 | S07AL26015C0, S07AL22025C0, S07AL22027C0, S07AL21113C0, S07AL23019C0, S07AL22029C0, S07AL26017C0, S07AL26003C0, S07AL27030C0, S07AL22021C0, S07AL40303C0, S07AL26019C0 |  |  |  |  | 37.12d | 0d | TESTING & COMMISSIONING [510 h]; Cost |  |  | S07TS01801C0 | SW | C | 07 | TS | SC | 018 | 01 | BILL 9 | B09 | S2 | 01 | R00 | ACF07 | 018 |  |  |  |  |  |  |  |  |  |  |  |
| S07TS01807C0 |  | SW-07 ; Touch-up & Clean / JV inspection /CIR /De-snag | 18d | 2012-12-04 | 2012-12-25 | S07AL06101C0, S07AL08709C0, S07AL09305C0, S07AL09601C0, S07AL09701C0, S07AL09903C0, S07AL09907C0, S07AL11001C0, S07AL11003C0, S07TS01804C0, S07AL05501C0, S07AL09602C0, S07AL09503C0 |  |  |  |  | 37.12d | 0d | TESTING & COMMISSIONING [128 h]; Cost |  |  | S07TS01802C0 | SW | C | 07 | TS | SC | 018 | 02 | BILL 9 | B09 | S2 | 02 | R00 | ACF07 | 018 |  |  |  |  |  |  |  |  |  |  |  |
| S07TS01810C0 |  | SW-07 ; Consultant's final de-snag inspection | 7d | 2012-12-25 | 2013-01-03 | S07TS01807C0 |  |  |  |  | 37.12d | 21.12d | Labor General [1 h]; Cost |  |  | S07TS01803C0 | SW | C | 07 | TS | SC | 018 | 03 | BILL 9 | B09 | S2 | 03 | R00 | ACF07 | 018 |  |  |  |  |  |  |  |  |  |  |  |
|  | 05 | **TR Room** |  | 2011-07-06 | 2012-09-06 |  |  |  |  |  |  |  |  |  |  |  |  |  |  |  |  |  |  |  |  |  |  |  |  |  |  |  |  |  |  |  |  |  |  |  |  |
| S07TR09201C0 |  | SW-07 ; Metal Studs (TR RM) | 45d | 2011-07-06 A | 2011-10-13 | S07S307807C0 | 75% | 11.25d | 2011-08-17 | 2011-10-11 | 61.5d | 0d | PARTITIONS [289 h]; PARTITIONS - Metal Studs [30 m]; Cost |  |  | S07TR09201C0 | SW | C | 07 | TR | PT | 092 | 01 | BILL 9 | B09 | S2 | 1F | R00 | ACF06 | 092 | 313 | 885 | 75 | 70 | 75 | GP | PMS |  |  |  |  |
| S07TR09203C0 |  | SW-07 ; Partitions 1st face (TR RM) | 45d | 2011-07-06 A | 2011-11-03 | S07TR09201C0 | 60% | 18d | 2011-09-03 | 2011-10-25 | 85.5d | 61.5d | PARTITIONS [30 m]; PARTITIONS [226 h]; Cost |  |  | S07TR09203C0 | SW | C | 07 | TR | PT | 092 | 03 | BILL 9 | B09 | S2 | 2F | R00 | ACF06 | 092 | 314 | 886 | 60 | 30 | 60 | GP | P1F |  |  |  |  |
| S07TR23009C0 |  | SW-07 ; 2nd Fix, Inst of VAV'S CHW connection (TR RM) | 30d | 2011-09-05 A | 2012-03-31 | S07TR09205C0 | 5% | 28.5d | 2012-02-12 | 2012-03-17 | 25.5d | 1.5d | MECHANICAL [1836 h]; Cost [55043.4 AED] | 55,043.41 | 2,752.17 | S07TR23009C0 | SW | C | 07 | TR | ME | 230 | 09 | BILL 9 | B09 | S2 | 2F | R00 | ACF07 | 230 |  |  |  |  |  | MEP |  | 2n |  |  |  |
| S07TR26026C0 |  | SW-07 ; 2nd Fix, Conduit (TR RM) | 30d | 2011-10-13 | 2011-11-21 | S07TR09201C0 |  |  |  |  | 61.5d | 0d | ELECTRICAL [868.8 h]; Cost |  |  | S07TR26026C0 | SW | C | 07 | TR | ME | 260 | 26 | BILL 9 | B09 | S2 | 2F | R00 | ACF07 | 260 |  |  |  |  |  | MEP |  | 2n |  |  |  |
| S07TR08101C0 |  | SW-07 ; Door Frames (TR RM) | 18d | 2011-11-01 | 2011-11-24 | S07TR09201C0, GNHE08101C0 FS+69d |  |  |  |  | 99.75d | 75.75d | ASSORTED DOORS [12 h]; Cost |  |  | S07TR08101C0 | SW | C | 07 | TR | DO | 081 | 01 | BILL 9 | B09 | S2 | DF | R00 | ACF06 | 081 | 316 | 20001090 |  |  |  |  |  |  | 08 |  |  |
| S07TR01005C0 |  | SW-07 ; 2nd, Wall Inspection by Consultant (TR RM) | 12d | 2011-11-21 | 2011-12-07 | S07TR26026C0 |  |  |  |  | 61.5d | 37.5d | Labor General [0.6 h]; Cost |  |  | S07TR01005C0 | SW | C | 07 | TR | ME | 010 | 05 | BILL 9 | B09 | S2 | WI | R00 | ACF07 | 010 |  |  |  |  |  | MEP |  | 2n |  |  |  |
| S07TR09205C0 |  | SW-07 ; Partitions Closing (TR RM) | 30d | 2012-01-21 | 2012-02-26 | S07TR01005C0, S07TR09201C0, S07TR09203C0, SAFOA09212C1 FF, S06TR09205C0 SS, S07TR08101C0 FF, S07PA09205C0 SS |  |  |  |  | 24d | 0d | PARTITIONS [30 m]; PARTITIONS [289 h]; Cost |  |  | S07TR09205C0 | SW | C | 07 | TR | PT | 092 | 05 | BILL 9 | B09 | S2 | FF | R00 | ACF06 | 092 | 315 | 887 |  |  |  | GP | P2F |  |  |  |  |
| S07TR09901C0 |  | SW-07 ; Wall Prime & 1st coat (TR RM) | 18d | 2012-02-26 | 2012-03-18 | S07TR09205C0 |  |  |  |  | 24d | 0d | WALL PAINT [50 h]; WALL PAINT [62 m2]; Cost |  |  | S07TR09901C0 | SW | C | 07 | TR | PA | 099 | 01 | BILL 9 | B09 | S2 | 01 | R00 | ACF06 | 099 | 360 | 20001110 |  |  |  |  |  |  |  |  |  |
| S07TR23011C0 |  | SW-07 ; 2nd Fix, Inst of VCD's/FD's (TR RM) | 30d | 2012-02-26 | 2012-04-01 | S07TR09205C0 |  |  |  |  | 24d | 0d | MECHANICAL [1927.2 h]; Cost |  |  | S07TR23011C0 | SW | C | 07 | TR | ME | 230 | 11 | BILL 9 | B09 | S2 | 2F | R00 | ACF07 | 230 |  |  |  |  |  | MEP |  | 2n |  |  |  |
| S07TR26005C0 |  | SW-07 ; 2nd Fix, Wiring for Power/Lighting/Emergency (TR RM) | 30d | 2012-02-26 | 2012-04-01 | S07TR09205C0, S07TR26026C0 |  |  |  |  | 72d | 48d | ELECTRICAL [661.2 h]; Cost |  |  | S07TR26005C0 | SW | C | 07 | TR | ME | 260 | 05 | BILL 9 | B09 | S2 | 2F | R00 | ACF07 | 260 |  |  |  |  |  | MEP |  | 2n |  |  |  |
| S07TR26007C0 |  | SW-07 ; 2nd Fix, Cable Pulling (TR RM) | 30d | 2012-02-26 | 2012-04-01 | S07TR09203C0, S07TR26026C0, S07TR09205C0 |  |  |  |  | 60d | 36d | ELECTRICAL [1953.6 h]; Cost |  |  | S07TR26007C0 | SW | C | 07 | TR | ME | 260 | 07 | BILL 9 | B09 | S2 | 2F | R00 | ACF07 | 260 |  |  |  |  |  | MEP |  | 2n |  |  |  |
| S07TR26009C0 |  | SW-07 ; 2nd Fix, Inst of Equipment (DB, TR, SG,BUS) (TR RM) | 54d | 2012-02-26 | 2012-04-29 | S07TR09205C0 |  |  |  |  | 64d | 40d | ELECTRICAL [3462 h]; Cost |  |  | S07TR26009C0 | SW | C | 07 | TR | ME | 260 | 09 | BILL 9 | B09 | S2 | 2F | R00 | ACF04 | 260 |  |  |  |  |  | MEP |  | 2n |  | E |  |
| S07TR26027C0 |  | SW-07 ; 2nd Fix, Wiring / Cabling (TR RM) | 30d | 2012-02-26 | 2012-04-01 | S07TR09203C0, S07TR26026C0, S07TR09205C0 |  |  |  |  | 72d | 48d | ELECTRICAL [661.2 h]; Cost |  |  | S07TR26027C0 | SW | C | 07 | TR | ME | 260 | 27 | BILL 9 | B09 | S2 | 2F | R00 | ACF07 | 260 | 417 | 1318 |  |  |  | MEP |  | 2n |  |  |  |
| S07TR09501C0 |  | SW-07 ; Ceiling Grid and Service Tile (TR RM) | 24d | 2012-03-18 | 2012-04-15 | S07TR09205C0 SS+15d, S07TR09901C0 |  |  |  |  | 24d | 0d | CEILING GRID FOR GYPSUM [53.57 h]; CEILING GRID FOR GYPSUM [4.49 m2]; Cost |  |  | S07TR09501C0 | SW | C | 07 | TR | CE | 095 | 01 | BILL 9 | B09 | S2 | 01 | R00 | ACF06 | 095 | 336 | 1327 |  |  |  |  |  |  |  |  | 1 |
| S07TR09903C0 |  | SW-07 ; Wall - Final Paint (TR RM) | 12d | 2012-03-18 | 2012-04-01 | S07TR09901C0 |  |  |  |  | 124d | 100d | WALL PAINT [28 h]; WALL PAINT [33 m2]; Cost |  |  | S07TR09903C0 | SW | C | 07 | TR | PA | 099 | 03 | BILL 9 | B09 | S2 | 02 | R00 | ACF06 | 099 | 361 | 1312 |  |  |  |  |  |  |  |  |  |
| S07TR23013C0 |  | SW-07 ; 2nd Fix, Insulation of CHW pipe & Duct (TR RM) | 36d | 2012-04-01 | 2012-05-13 | S07TR23009C0, S07TR23011C0 |  |  |  |  | 24d | 0d | MECHANICAL [4532.4 h]; Cost |  |  | S07TR23013C0 | SW | C | 07 | TR | ME | 230 | 13 | BILL 9 | B09 | S2 | 2F | R00 | ACF07 | 230 |  |  |  |  |  | MEP |  | 2n |  |  |  |
| S07TR09601C0 |  | SW-07 ; Floor Finishes (TR RM) | 18d | 2012-04-15 | 2012-05-06 | S07TR09205C0, S07TR09501C0 |  |  |  |  | 24d | 0d | ASSORTED FLOOR FINISH [992 h]; ASSORTED FLOOR FINISH [548 m2]; Cost |  |  | S07TR09601C0 | SW | C | 07 | TR | FF | 096 | 01 | BILL 9 | B09 | S2 | 01 | R00 | ACF06 | FF | 359 | 20001120 |  |  |  |  |  |  |  |  |  |
| S07TR23023C0 |  | SW-07 ; 2nd Fix, Flexible ducts (TR RM) | 30d | 2012-04-15 | 2012-05-20 | S07TR09205C0, S07TR09501C0 |  |  |  |  | 30d | 6d | MECHANICAL [982.8 h]; Cost |  |  | S07TR23023C0 | SW | C | 07 | TR | ME | 230 | 23 | BILL 9 | B09 | S2 | 2F | R00 | ACF07 | 230 | 412 | 20001140 |  |  |  | MEP |  | 2n |  |  |  |
| S07TR27002C0 |  | SW-07 ; 2nd Fix, Dressing of ELV panels (TR RM) | 30d | 2012-04-15 | 2012-05-20 | S07TR09205C0, S07TR27020C0 SS |  |  |  |  | 46d | 22d | ELECTRICAL [1401.6 h]; Cost |  |  | S07TR27002C0 | SW | C | 07 | TR | ME | 270 | 02 | BILL 9 | B09 | S2 | 2F | R00 | ACF07 | 270 |  |  |  |  |  | MEP |  | 2n |  |  |  |
| S07TR27020C0 |  | SW-07 ; 2nd Fix, Inst of ELV Equipment (Panels) (TR RM) | 36d | 2012-04-15 | 2012-05-27 | S07TR09205C0, S07TR09501C0 |  |  |  |  | 24d | 0d | ELECTRICAL [2151.6 h]; Cost |  |  | S07TR27020C0 | SW | C | 07 | TR | ME | 270 | 20 | BILL 9 | B09 | S2 | 2F | R00 | ACF04 | 270 |  |  |  |  |  | MEP |  | 2n |  | E |  |
| S07TR08105C0 |  | SW-07 ; Doors (TR RM) | 18d | 2012-05-06 | 2012-05-27 | S07TR08101C0, S07TR09901C0, S07TR09601C0 |  |  |  |  | 62d | 0d | ASSORTED DOORS [30 h]; ASSORTED DOORS [3 no]; Cost |  |  | S07TR08105C0 | SW | C | 07 | TR | DO | 081 | 05 | BILL 9 | B09 | S2 | DR | R00 | ACF06 | 081 | 317 | 1325 |  |  |  |  |  |  | 08 |  |  |
| S07TR21115C0 |  | SW-07 ; 2nd Fix, Gaseous Fire Suppression (TR RM) | 18d | 2012-05-06 | 2012-05-27 | S07TR09601C0 |  |  |  |  | 24d | 0d | MECHANICAL [3870 h]; Cost |  |  | S07TR21115C0 | SW | C | 07 | TR | ME | 211 | 15 | BILL 9 | B09 | S2 | 2F | R00 | ACF07 | 211 | 411 | 20001130 |  |  |  | MEP |  | 2n |  |  |  |
| S07TR01006C0 |  | SW-07 ; 2nd, Ceiling Inspection by Consultants (TR RM) | 12d | 2012-05-13 | 2012-05-27 | S07TR23009C0, S07TR23011C0, S07TR23013C0, S07TR26007C0, S07TR09501C0 |  |  |  |  | 24d | 0d | Labor General [0.6 h]; Cost |  |  | S07TR01006C0 | SW | C | 07 | TR | ME | 010 | 06 | BILL 9 | B09 | S2 | CI | R00 | ACF07 | 010 |  |  |  |  |  | MEP |  | 2n |  |  |  |
| S07TR08709C0 |  | SW-07 ; Ironmongery (TR RM) | 14d | 2012-05-27 | 2012-06-12 | S07TR08105C0 |  |  |  |  | 62d | 38d | IRONMONGERY [30 h]; IRONMONGERY [3 no]; Cost |  |  | S07TR08709C0 | SW | C | 07 | TR | DO | 087 | 09 | BILL 9 | B09 | S2 | IM | R00 | ACF06 | 087 | 322 | 20001100 |  |  |  |  |  |  | 08 |  |  |
| S07TR09503C0 |  | SW-07 ; Ceiling closure (TR RM) | 16d | 2012-05-27 | 2012-06-14 | S07TR01006C0, S07TR21115C0, S07TR26005C0, S07TR26007C0, S07TR26026C0, S07TR26027C0, S07TR27020C0, S07TR23023C0 |  |  |  |  | 24d | 0d | ASSORTED CEILING FINISH [49.2 h]; CEILING GYPSUM [1.44 h]; ASSORTED CEILING FINISH [80 m2]; CEILING GYPSUM [4 m2]; Cost |  |  | S07TR09503C0 | SW | C | 07 | TR | CE | 095 | 03 | BILL 9 | B09 | S2 | 02 | R00 | ACF06 | 095 | 337 | 20001080 |  |  |  |  |  |  |  |  |  |
| S07TR09905C0 |  | SW-07 ; Ceiling Prime & 1st coat (TR RM) | 18d | 2012-06-14 | 2012-07-07 | S07TR09503C0 |  |  |  |  | 30d | 0d | CEILING PAINT [4 h]; CEILING PAINT [4 m2]; Cost |  |  | S07TR09905C0 | SW | C | 07 | TR | PA | 099 | 05 | BILL 9 | B09 | S2 | 01 | R00 | ACF06 | 099 | 362 | 1313 |  |  |  |  |  |  |  |  |  |
| S07TR23003C0 |  | SW-07 ; Final Fix, Inst of Grilles & Diffusers (TR RM) | 18d | 2012-06-14 | 2012-07-07 | S07TR09503C0 |  |  |  |  | 24d | 0d | MECHANICAL [835.2 h]; Cost |  |  | S07TR23003C0 | SW | C | 07 | TR | ME | 230 | 03 | BILL 9 | B09 | S2 | FF | R00 | ACF07 | 230 |  |  |  |  |  | MEP |  | FF |  |  |  |
| S07TR23074C0 |  | SW-07 ; Final Fix, Grilles, panels & diffusers (TR RM) | 18d | 2012-06-14 | 2012-07-07 | S07TR09503C0 |  |  |  |  | 24d | 0d | MECHANICAL [835.2 h]; Cost |  |  | S07TR23074C0 | SW | C | 07 | TR | ME | 230 | 74 | BILL 9 | B09 | S2 | FF | R00 | ACF07 | 230 | 419 | 20001160 |  |  |  | MEP |  | FF |  |  |  |
| S07TR26013C0 |  | SW-07 ; Final Fix, Termination & Gladding of Cables (TR RM) | 18d | 2012-06-14 | 2012-07-07 | S07TR09503C0, S07TR26009C0 |  |  |  |  | 24d | 0d | ELECTRICAL [85.2 h]; Cost |  |  | S07TR26013C0 | SW | C | 07 | TR | ME | 260 | 13 | BILL 9 | B09 | S2 | FF | R00 | ACF07 | 260 |  |  |  |  |  | MEP |  | FF |  |  |  |
| S07TR26015C0 |  | SW-07 ; Final Fix, Inst of Ceiling rose (TR RM) | 18d | 2012-06-14 | 2012-07-07 | S07TR09503C0 |  |  |  |  | 24d | 0d | ELECTRICAL [36 h]; Cost |  |  | S07TR26015C0 | SW | C | 07 | TR | ME | 260 | 15 | BILL 9 | B09 | S2 | FF | R00 | ACF07 | 260 |  |  |  |  |  | MEP |  | FF |  |  |  |
| S07TR26017C0 |  | SW-07 ; Final Fix, Inst of Switch/Sockets (TR RM) | 12d | 2012-06-14 | 2012-06-30 | S07TR09901C0, S07TR09503C0 |  |  |  |  | 30d | 6d | ELECTRICAL [256.8 h]; Cost |  |  | S07TR26017C0 | SW | C | 07 | TR | ME | 260 | 17 | BILL 9 | B09 | S2 | FF | R00 | ACF07 | 260 |  |  |  |  |  | MEP |  | FF |  |  |  |
| S07TR26019C0 |  | SW-07 ; Final Fix, Inst of Light fittings (TR RM) | 18d | 2012-06-14 | 2012-07-07 | S07TR09503C0 |  |  |  |  | 24d | 0d | ELECTRICAL [4813.2 h]; Cost |  |  | S07TR26019C0 | SW | C | 07 | TR | ME | 260 | 19 | BILL 9 | B09 | S2 | FF | R00 | ACF07 | 260 |  |  |  |  |  | MEP |  | FF |  |  |  |
| S07TR26076C0 |  | SW-07 ; Final Fix, Lighting fittings (TR RM) | 18d | 2012-06-14 | 2012-07-07 | S07TR09503C0 |  |  |  |  | 24d | 0d | ELECTRICAL [4813.2 h]; Cost |  |  | S07TR26076C0 | SW | C | 07 | TR | ME | 260 | 76 | BILL 9 | B09 | S2 | FF | R00 | ACF07 | 260 | 420 | 20001170 |  |  |  | MEP |  | FF |  |  |  |
| S07TR27030C0 |  | SW-07 ; Final Fix, Inst of ELV devise (Detector/Speaker) (TR RM) | 18d | 2012-06-14 | 2012-07-07 | S07TR09503C0, S07TR27002C0 |  |  |  |  | 24d | 0d | ELECTRICAL [1348.8 h]; Cost |  |  | S07TR27030C0 | SW | C | 07 | TR | ME | 270 | 30 | BILL 9 | B09 | S2 | FF | R00 | ACF07 | 270 |  |  |  |  |  | MEP |  | FF |  |  |  |
| S07TR01802C0 |  | SW-07 ; MEP de-snag, FIREM sign-off | 18d | 2012-07-07 | 2012-07-28 | S07TR26017C0, S07TR23074C0, S07TR23003C0, S07TR26076C0, S07TR26013C0, S07TR26015C0, S07TR26019C0, S07TR27030C0 |  |  |  |  | 24d | 0d | TESTING & COMMISSIONING [510 h]; Cost |  |  | S05CO01851C0 | SW | C | 07 | TR | SC | 018 | 53 | BILL 9 | B09 | S2 | 01 | R00 | ACF07 | 018 |  |  |  |  |  |  |  |  |  |  |  |
| S07TR09907C0 |  | SW-07 ; Ceiling - Final paint (TR RM) | 12d | 2012-07-07 | 2012-07-21 | S07TR09905C0 |  |  |  |  | 30d | 6d | CEILING PAINT [2 h]; CEILING PAINT [2 m2]; Cost |  |  | S07TR09907C0 | SW | C | 07 | TR | PA | 099 | 07 | BILL 9 | B09 | S2 | 02 | R00 | ACF06 | 099 | 363 | 1314 |  |  |  |  |  |  |  |  |  |
| S07TR01801C0 |  | SW-07 ; Touch-up & Clean / JV inspection /CIR /De-snag | 23.5d | 2012-07-28 | 2012-08-27 | S07TR01802C0, S07TR08709C0, S07TR09601C0, S07TR09903C0, S07TR09907C0 |  |  |  |  | 24d | 0d | TESTING & COMMISSIONING [128 h]; Cost |  |  | S07TR01851C0 | SW | C | 07 | TR | SC | 018 | 51 | BILL 9 | B09 | S2 | 02 | R00 | ACF07 | 018 | 396 |  |  |  |  |  |  |  |  |  |  |
| S07TR01803C0 |  | SW-07 ; Consultant's final de-snag inspection | 9.75d | 2012-08-27 | 2012-09-06 | S07TR01801C0 |  |  |  |  | 24d | 15.5d | Labor General [1 h]; Cost |  |  | CP3TS01803C0 | SW | C | 07 | TR | SC | 018 | 03 | BILL 9 | B09 | S1 | 03 | R00 | ACF07 | 018 |  |  |  |  |  |  |  |  |  |  |  |

| ID | WBS | Activity | Duration | Start | Finish | Predecessors | Complete | Remaining | Planned start | Planned finish | Total float | Free float | Resources | Cost | Actual cost | change id | RENZ % COMPLETE | CCAD BUILDING(SET) | CCAD PHASE(SET) | CCAD FLOOR(SET) | CCAD ZONE(SET) | CCAD WORK(SET) | CCAD SECTION(SET) | CCAD SERIAL No.(SET) | CCAD CBS(SET) | CCAD BILL(SET) | CCAD HANDOVER(SET) | CCAD TAG(SET) | CCAD REV(SET) | CCADACF (SET) | CCAD SSCF | Actual Cost | Phase | Area/ Department | Grids | Are | Weight & Nos | Process | Levels | CCAD CSA | Claimed This Month | P_811 | P_711 | U% | user_number8 | user_integer1 | user_integer2 | user_number7 | July2011 Target% Complete | CCAD SUB ZONE MEP(SET) | Act Selector % | Change Order # | NEW ACTIVITY ID | CCAD DIVISION(SET) | CCAD MEQ | R3 Finish |
| --- | --- | --- | --- | --- | --- | --- | --- | --- | --- | --- | --- | --- | --- | --- | --- | --- | --- | --- | --- | --- | --- | --- | --- | --- | --- | --- | --- | --- | --- | --- | --- | --- | --- | --- | --- | --- | --- | --- | --- | --- | --- | --- | --- | --- | --- | --- | --- | --- | --- | --- | --- | --- | --- | --- | --- | --- |
|  | 08 | **Level 8** |  | 2010-11-29 | 2013-01-29 |  |  |  |  |  |  |  |  |  |  |  |  |  |  |  |  |  |  |  |  |  |  |  |  |  |  |  |  |  |  |  |  |  |  |  |  |  |  |  |  |  |  |  |  |  |  |  |  |  |  |  |
|  | 01 | **Structure & Envelopment** |  | 2010-11-29 | 2012-01-31 |  |  |  |  |  |  |  |  |  |  |  |  |  |  |  |  |  |  |  |  |  |  |  |  |  |  |  |  |  |  |  |  |  |  |  |  |  |  |  |  |  |  |  |  |  |  |  |  |  |  |  |
| S08SA03307C0 |  | SW-08 ; Corewall Concrete (Zone SA) | 3d | 2010-11-29 A | 2010-12-07 A | S07SA03307C0 | 100% |  | 2011-01-13 | 2011-01-16 |  |  | CONCRETE [6688 h]; CONCRETE [168 m3]; Cost |  |  | S08SA03307C0 | 100 | SW | C | 08 | SA | CT | 033 | 07 | BILL 9 | B09 | S2 | 04 | R00 | ACF03 | 033 |  |  |  |  |  |  |  |  |  |  |  |  |  |  |  |  |  |  |  |  |  |  |  |  |  |
| S08SC03305C0 |  | SW-08 ; Corewall Concrete (Zone SC) | 6d | 2010-12-16 A | 2010-12-23 A | S07SC03305C0 | 100% |  | 2011-01-23 | 2011-01-29 |  |  | CONCRETE [6688 h]; CONCRETE [168 m3]; Cost |  |  | S08SC03305C0 | 100 | SW | C | 08 | SC | CT | 033 | 05 | BILL 9 | B09 | S2 | 04 | R00 | ACF03 | 033 |  |  |  |  |  |  |  |  |  |  |  |  |  |  |  |  |  |  |  |  |  |  |  |  |  |
| S08S105101C0 |  | SW-08 ; Erection of Structural Steel of 8th Floor (Zone S1) | 5d | 2011-01-08 A | 2011-04-21 A | S07S105103C0, S08SA03307C0 | 100% |  | 2011-01-24 | 2011-01-30 |  |  | STRUCTURAL STEEL [11333 h]; STRUCTURAL STEEL [381 T(Fe)]; Cost |  |  | S08S105101C0 | 100 | SW | C | 08 | S1 | ST | 051 | 01 | BILL 9 | B09 | S2 | 01 | R00 | ACF03 | 051 | 1756740.91 | Z2 | SW | 5TH | C | A8B | EREC | 6FLR | ST |  |  |  |  |  |  |  |  |  |  |  |  |  |  |  |  |
| S08S105103C0 |  | SW-08 ; Alignment & welding of 8th Floor (Zone S1) | 5d | 2011-01-14 A | 2011-04-25 A | S08S105101C0 | 100% |  | 2011-01-30 | 2011-02-05 |  |  | STRUCTURAL STEEL [468 h]; Cost |  |  | S08S105103C0 | 100 | SW | C | 08 | S1 | ST | 051 | 03 | BILL 9 | B09 | S2 | 02 | R00 | ACF03 | 051 |  | Z2 | SW | 5TH | C | A8B | EREC | 6FLR | ST |  |  |  |  |  |  |  |  |  |  |  |  |  |  |  |  |
| S08S305103C0 |  | SW-08 ; Alignment & welding of 8th Floor (Zone S3) | 7d | 2011-02-02 A | 2011-06-24 A | S08S305101C0 | 100% |  | 2011-03-26 | 2011-04-03 |  |  | STRUCTURAL STEEL [1147 h]; Cost |  |  | S08S305103C0 | 95 | SW | C | 08 | S3 | ST | 051 | 03 | BILL 9 | B09 | S2 | 02 | R00 | ACF03 | 051 |  | Z2 | SW | 5TH | C | A8B | EREC | 6FLR | ST | 23218.69 |  |  |  |  |  |  |  |  |  |  |  |  |  |  |  |
| S08S305101C0 |  | SW-08 ; Erection of Structural Steel of 8th Floor (Zone S3) | 8d | 2011-02-05 A | 2011-06-28 A | S07S305103C0 | 100% |  | 2011-03-29 | 2011-04-07 |  |  | STRUCTURAL STEEL [5082 h]; STRUCTURAL STEEL [170 T(Fe)]; Cost |  |  | S08S305101C0 | 95 | SW | C | 08 | S3 | ST | 051 | 01 | BILL 9 | B09 | S2 | 01 | R00 | ACF03 | 051 |  | Z2 | SW | 5TH | C | A8B | EREC | 6FLR | ST | 209376.14 |  |  |  |  |  |  |  |  |  |  |  |  |  |  |  |
| S08S205101C0 |  | SW-08 ; Erection of Structural Steel of 8th Floor (Zone S2) | 10d | 2011-04-07 A | 2011-06-23 A | S07S205103C0, S08SC03305C0 | 100% |  | 2011-04-16 | 2011-04-27 |  |  | STRUCTURAL STEEL [9421 h]; STRUCTURAL STEEL [316 T(Fe)]; Cost |  |  | S08S205101C0 | 95 | SW | C | 08 | S2 | ST | 051 | 01 | BILL 9 | B09 | S2 | 01 | R00 | ACF03 | 051 |  | Z2 | SW | 5TH | C | A8B | EREC | 6FLR | ST | 108307.2 |  |  |  |  |  |  |  |  |  |  |  |  |  |  |  |
| S08S205103C0 |  | SW-08 ; Alignment & welding of 8th Floor (Zone S2) | 8d | 2011-04-11 A | 2011-06-29 A | S08S205101C0 | 100% |  | 2011-04-27 | 2011-05-07 |  |  | STRUCTURAL STEEL [475 h]; Cost |  |  | S08S205103C0 | 95 | SW | C | 08 | S2 | ST | 051 | 03 | BILL 9 | B09 | S2 | 02 | R00 | ACF03 | 051 |  | Z2 | SW | 5TH | C | A8B | EREC | 6FLR | ST | 12033.82 |  |  |  |  |  |  |  |  |  |  |  |  |  |  |  |
| S08S103399C0 |  | SW-08 ; Concrete on Metal Decking Lvl - 8 (Zone S1) | 10d | 2011-04-20 A | 2011-05-30 A | S08S105305C0 | 100% |  | 2011-03-23 | 2011-04-04 |  |  | CONCRETE [5568 h]; CONCRETE [140 m3]; Cost |  |  | S08S105335C0 | 100 | SW | C | 08 | S1 | CT | 033 | 99 | BILL 9 | B09 | S2 | 08 | R00 | ACF03 | 033 |  | Z2 | SW | 5TH | C | A8B | MDEC | 6FLR |  |  |  |  |  |  |  |  |  |  |  |  |  |  |  |  |  |
| S08S105305C0 |  | SW-08 ; Metal Decking Lvl - 8 (Zone S1) | 15d | 2011-04-20 A | 2011-05-30 A | S08S105103C0, SR8S105101C0 | 100% |  | 2011-03-06 | 2011-03-23 |  |  | METAL DECKING [2400 h]; METAL DECKING [1432 m2]; Cost |  |  | S08S105305C0 | 100 | SW | C | 08 | S1 | ST | 053 | 05 | BILL 9 | B09 | S2 | 03 | R00 | ACF03 | 053 |  | Z2 | SW | 5TH | C | A8B | MDEC | 6FLR | ST |  |  |  |  |  |  |  |  |  |  |  |  |  |  |  |  |
| S08S305305C0 |  | SW-08 ; Metal Decking Lvl - 8 (Zone S3) | 22d | 2011-04-26 A | 2011-06-30 A | S08S305103C0, SR8S305101C0 | 100% |  | 2011-04-12 | 2011-05-08 |  |  | METAL DECKING [5874 h]; METAL DECKING [3504 m2]; Cost |  |  | S08S305305C0 | 95 | SW | C | 08 | S3 | ST | 053 | 05 | BILL 9 | B09 | S2 | 03 | R00 | ACF03 | 053 |  | Z2 | SW | 5TH | C | A8B | MDEC | 6FLR | ST | 17820.99 |  |  |  |  |  |  |  |  |  |  |  |  |  |  |  |
| S08S107807C0 |  | SW-08 ; Cementitious Fire Proofing Lvl - 8 (Zone S1) | 10d | 2011-05-15 A | 2011-06-30 A | SR8S103399C0 | 100% |  | 2011-06-14 | 2011-06-26 |  |  | CEMENTITIOUS FIREPROOFING [603 h]; CEMENTITIOUS FIREPROOFING [1205 m2]; Cost |  |  | S08S107807C0 | 50 | SW | C | 08 | S1 | ST | 078 | 07 | BILL 9 | B09 | S2 | 04 | R00 | ACF03 | 078 |  | Z2 | SW | 5TH | C | A8B | FIRE | 6FLR | ST | 81973.18 |  |  |  |  |  |  |  |  |  |  |  |  |  |  |  |
| S08S203399C0 |  | SW-08 ; Concrete on Metal Decking Lvl - 8 (Zone S2) | 10d | 2011-05-15 A | 2011-06-22 A | S08S205305C0 | 100% |  | 2011-07-03 | 2011-07-14 |  |  | CONCRETE [8272 h]; CONCRETE [208 m3]; Cost |  |  | S08S205335C0 | 80 | SW | C | 08 | S2 | CT | 033 | 99 | BILL 9 | B09 | S2 | 08 | R00 | ACF03 | 033 |  | Z2 | SW | 5TH | C | A8B | MDEC | 6FLR |  | 43606.31 |  |  |  |  |  |  |  |  |  |  |  |  |  |  |  |
| S08S205305C0 |  | SW-08 ; Metal Decking Lvl - 8 (Zone S2) | 19d | 2011-05-15 A | 2011-06-21 A | S08S205103C0, SR8S205101C0 | 100% |  | 2011-06-08 | 2011-07-02 |  |  | METAL DECKING [3045 h]; METAL DECKING [1816 m2]; Cost |  |  | S08S205305C0 | 95 | SW | C | 08 | S2 | ST | 053 | 05 | BILL 9 | B09 | S2 | 03 | R00 | ACF03 | 053 |  | Z2 | SW | 5TH | C | A8B | MDEC | 6FLR | ST | 9236.6 |  |  |  |  |  |  |  |  |  |  |  |  |  |  |  |
| S08S307807C0 |  | SW-08 ; Cementitious Fire Proofing Lvl - 8 (Zone S3) | 10d | 2011-05-15 A | 2011-07-19 A | SR8S303399C0 | 100% |  | 2011-07-04 | 2011-07-16 |  |  | CEMENTITIOUS FIREPROOFING [1475 h]; CEMENTITIOUS FIREPROOFING [2949 m2]; Cost |  |  | S08S307807C0 | 50 | SW | C | 08 | S3 | ST | 078 | 07 | BILL 9 | B09 | S2 | 04 | R00 | ACF03 | 078 |  | Z2 | SW | 5TH | C | A8B | FIRE | 6FLR | ST | 200679.63 |  |  |  |  |  |  |  |  |  |  |  |  |  |  |  |
| S08S303399C0 |  | SW-08 ; Concrete on Metal Decking Lvl - 8 (Zone S3) | 10d | 2011-06-13 A | 2011-07-31 A | S08S305305C0 | 100% |  | 2011-06-30 | 2011-07-12 |  |  | CONCRETE [13752 h]; CONCRETE [346 m3]; Cost |  |  | S08S305335C0 |  | SW | C | 08 | S3 | CT | 033 | 99 | BILL 9 | B09 | S2 | 08 | R00 | ACF03 | 033 |  | Z2 | SW | 5TH | C | A8B | MDEC | 6FLR |  |  |  |  |  |  |  |  |  |  |  |  |  |  |  |  |  |
| S08S207807C0 |  | SW-08 ; Cementitious Fire Proofing Lvl - 8 (Zone S2) | 10d | 2011-06-26 A | 2011-07-31 A | SR8S203399C0 | 100% |  | 2011-06-30 | 2011-07-12 |  |  | CEMENTITIOUS FIREPROOFING [764 h]; CEMENTITIOUS FIREPROOFING [1528 m2]; Cost |  |  | S08S207807C0 |  | SW | C | 08 | S2 | ST | 078 | 07 | BILL 9 | B09 | S2 | 04 | R00 | ACF03 | 078 |  | Z2 | SW | 5TH | C | A8B | FIRE | 6FLR | ST |  |  |  |  |  |  |  |  |  |  |  |  |  |  |  |  |
| S08CO04403C0 |  | SW-08 ; C2 Bracket (Common Zone) | 96d | 2011-07-02 A | 2011-10-23 | S08S107807C0, S08S207807C0 FF, S08S307807C0 | 80% | 19.2d | 2011-07-02 | 2011-10-24 | 46.45d | 0d | FACADE CURTAIN WALL 2 [987.6 h]; Cost |  |  | S08CO04403C0 |  | SW | C | 08 | CO | FA | 044 | 03 | BILL 9 | B09 | S2 | FC2 | R00 | ACF05 | 044 |  |  |  |  |  |  |  |  | FA |  | 70 | 15 | 70 |  |  |  |  |  |  |  |  |  |  |  |  |
| S08CO04405C0 |  | SW-08 ; C2 Transom & Mullion (Common Zone) | 90d | 2011-08-10 A | 2011-10-29 | S08CO04403C0 SS | 73% | 24.3d | 2011-08-23 | 2011-12-14 | 46.45d | 0d | FACADE CURTAIN WALL 2 [3949.8 h]; PARTITIONS [1362 m]; Cost |  |  | S08CO04405C0 |  | SW | C | 08 | CO | FA | 044 | 05 | BILL 9 | B09 | S2 | FC2 | R00 | ACF05 | 044 |  |  |  |  |  |  |  |  | FA |  | 18 | 0 | 73 | 0 | 0 | 0 | 0 |  |  |  |  |  |  |  |  |
| S08CO04406C0 |  | SW-08 ; C2 Glazing (Common Zone) | 90d | 2011-08-10 A | 2011-10-29 | S08CO04405C0 SS, S08CO04405C0 FF | 73% | 24.3d | 2011-08-23 | 2011-12-14 | 46.45d | 11.7d | FACADE CURTAIN WALL 2 [4083 h]; FACADE CURTAIN WALL 2 [870.92 m2]; FACADE TOTAL QUANTITY m2 [870.92 m2]; Cost |  |  | S08CO04406C0 |  | SW | C | 08 | CO | FA | 044 | 06 | BILL 9 | B09 | S2 | FC2 | R00 | ACF05 | 044 |  |  |  |  |  |  |  |  | FA |  | 18 | 0 | 73 | 0 | 0 | 0 | 0 |  |  |  |  |  |  |  |  |
| S08CO04415C0 |  | SW-08 ; SG Catwalk Installation (Common Zone) | 74d | 2011-10-30 | 2012-01-31 | SEXCO04403C0 SS, S07CO04415C0 SS |  |  |  |  | 167.08d | 126.5d | FACADE TOTAL QUANTITY m2 [388 m2]; FACADE CURTAIN WALL 5 [96 m2]; FACADE CURTAIN WALL 6 [292 m2]; Labor General [6485 h]; Cost |  |  | I05CO04411C0 |  | SW | C | 08 | CO | FA | 044 | 11 | BILL 9 | B09 | S2 | SG | R00 | ACF05 | 044 |  |  |  |  |  |  |  |  | FA |  |  |  |  |  |  |  |  |  |  |  |  |  |  |  |  |
|  | 02 | **Public Area ( Elev.Lobby & Corridors )** |  | 2011-06-08 | 2013-01-20 |  |  |  |  |  |  |  |  |  |  |  |  |  |  |  |  |  |  |  |  |  |  |  |  |  |  |  |  |  |  |  |  |  |  |  |  |  |  |  |  |  |  |  |  |  |  |  |  |  |  |  |
| S08PA22019C0 |  | SW-08 ; 1st Fix, Inst of Drainage pipe (ceiling) (Public Area) | 66d | 2011-06-08 A | 2011-11-28 | S08PA23001C0 SS | 30% | 46.2d | 2011-08-27 | 2011-11-17 | 68.5d | 6.3d | PLUMBING [310.8 h]; Cost [16770.4 AED] | 16,770.39 | 5,031.12 | S08PA22019C0 |  | SW | C | 08 | PA | ME | 220 | 19 | BILL 9 | B09 | S2 | 1F | R00 | ACF04 | 220 |  |  |  |  |  |  |  |  | MEP | 1944.62 | 30 | 20 | 30 | 0 | 0 | 0 | 0 | 10 | 1S | M1F |  |  |  |  |  |
| S08PA23001C0 |  | SW-08 ; 1st Fix, Inst. of Supports for MEP (Public Area) | 42d | 2011-06-19 A | 2011-10-08 | S08S107807C0, S08S207807C0, S08S307807C0 | 85% | 6.3d | 2011-06-19 | 2011-08-08 | 38.5d | 0d | MECHANICAL [536.4 h]; Cost [30275.7 AED] | 30,275.67 | 25,734.32 | S08PA23001C0 |  | SW | C | 08 | PA | ME | 230 | 01 | BILL 9 | B09 | S2 | 1F | R00 | ACF04 | 230 |  |  |  |  |  |  |  |  | MEP | 10535.94 |  |  | 85 |  |  |  |  | 30 | 1S | M1F |  |  |  |  |  |
| S08PA09201C0 |  | SW-08 ; Metal Studs (Public Area) | 45d | 2011-07-10 A | 2011-12-21 | S08PA23001C0 SS+12d, SAFCI09201R02 FS+72d | 20% | 36d | 2011-07-04 | 2011-08-25 | 8.5d | 0d | PARTITIONS [5398 h]; PARTITIONS - Metal Studs [603 m]; Cost |  |  | S08PA09201C0 |  | SW | C | 08 | PA | PT | 092 | 01 | BILL 9 | B09 | S2 | 1F | R00 | ACF06 | 092 |  |  |  |  |  |  |  |  | GP |  | 10 | 5 | 20 | 0 | 0 | 0 | 0 |  |  | PMS | 313 | 944 |  |  |  |
| S08PA21111C0 |  | SW-08 ; 1st Fix, Inst of Sprinkler main pipe (Public Area) | 66d | 2011-07-10 A | 2011-11-10 | S08PA23001C0 SS | 50% | 33d | 2011-09-24 | 2011-12-15 | 70.83d | 6.3d | MECHANICAL [793.2 h]; Cost [43268 AED] | 43,267.97 | 21,633.98 | S08PA21111C0 |  | SW | C | 08 | PA | ME | 211 | 11 | BILL 9 | B09 | S2 | 1F | R00 | ACF04 | 211 |  |  |  |  |  |  |  |  | MEP |  | 30 | 10 | 40 | 0 | 0 | 0 | 0 | 30 | 1S | M1F |  |  |  |  |  |
| S08PA21117C0 |  | SW-08 ; 1st Fix, Inst of Sprinkler branch pipe (Public Area) | 66d | 2011-07-10 A | 2011-12-18 | S08PA09201C0 SS | 50% | 33d | 2011-11-12 | 2012-01-31 | 59.5d | 51d | MECHANICAL [682.8 h]; Cost [37306.8 AED] | 37,306.8 | 18,653.4 | S08PA21117C0 |  | SW | C | 08 | PA | ME | 211 | 17 | BILL 9 | B09 | S2 | 1F | R00 | ACF04 | 211 |  |  |  |  |  |  |  |  | MEP |  | 30 | 10 | 40 | 0 | 0 | 0 | 0 |  | 1S | M1F |  |  |  |  |  |
| S08PA26013C0 |  | SW-08 ; 1st Fix, Inst of Cable Tray (Public Area) | 60d | 2011-08-10 A | 2011-11-21 | S08PA23001C0 SS, S08S107807C0, S08S207807C0, S08S307807C0 | 30% | 42d | 2011-09-24 | 2011-12-08 | 122.12d | 0d | ELECTRICAL [231.6 h]; Cost [13047.4 AED] | 13,047.37 | 3,914.21 | S08PA26013C0 |  | SW | C | 08 | PA | ME | 260 | 13 | BILL 9 | B09 | S2 | 1F | R00 | ACF04 | 260 |  |  |  |  |  |  |  |  | MEP |  | 10 | 0 | 30 | 0 | 0 | 0 | 0 | 10 | 1S | M1F |  |  |  |  |  |
| S08PA27010C0 |  | SW-08 ; 1st Fix, Inst of Trunking for ELV system (Public Area) | 60d | 2011-08-10 A | 2011-11-21 | S08PA23001C0 SS, S08S107807C0, S08S207807C0, S08S307807C0 | 30% | 42d | 2011-09-12 | 2011-11-24 | 122.12d | 0d | ELECTRICAL [991.2 h]; Cost [51056.8 AED] | 51,056.81 | 15,317.04 | S08PA27010C0 |  | SW | C | 08 | PA | ME | 270 | 10 | BILL 9 | B09 | S2 | 1F | R00 | ACF04 | 270 |  |  |  |  |  |  |  |  | MEP |  | 5 | 0 | 30 | 0 | 0 | 0 | 0 |  | 1S | M1F |  |  |  |  |  |
| S08PA23017C0 |  | SW-08 ; 1st Fix, Inst of CHW pipe (Public Area) | 54d | 2011-09-05 A | 2011-12-12 | S08PA21111C0 SS+14d, S08PA23001C0 | 5% | 51.3d | 2011-10-24 | 2012-01-02 | 64.53d | 0d | MECHANICAL [1687.2 h]; Cost [92145.2 AED] | 92,145.18 | 4,607.26 | S08PA23017C0 |  | SW | C | 08 | PA | ME | 230 | 17 | BILL 9 | B09 | S2 | 1F | R00 | ACF04 | 230 |  |  |  |  |  |  |  |  | MEP |  |  |  |  |  |  |  |  |  | 1S | M1F |  |  |  |  |  |
| S08PA23023C0 |  | SW-08 ; 1st Fix, Inst of Main Ducting (Public Area) | 60d | 2011-09-05 A | 2011-12-12 | S08PA23001C0, S08PA23017C0 SS+10d | 15% | 51d | 2011-11-05 | 2012-01-21 | 106.83d | 0d | MECHANICAL [6650.4 h]; Cost [363211 AED] | 363,210.66 | 54,481.6 | S08PA23023C0 |  | SW | C | 08 | PA | ME | 230 | 23 | BILL 9 | B09 | S2 | 1F | R00 | ACF04 | 230 |  |  |  |  |  |  |  |  | MEP |  |  |  | 15 |  |  |  |  |  | 1S | M1F |  |  |  |  |  |
| S08PA26001C0 |  | SW-08 ; 1st Fix, Inst of Trunking/Conduiting (Public Area) | 48d | 2011-09-05 A | 2011-11-19 | S08PA23001C0, S08S107807C0, S08S207807C0, S08S307807C0 | 30% | 33.6d | 2011-10-24 | 2011-12-25 | 124.22d | 2.1d | ELECTRICAL [447.6 h]; Cost [24105.1 AED] | 24,105.11 | 7,231.53 | S08PA26001C0 |  | SW | C | 08 | PA | ME | 260 | 01 | BILL 9 | B09 | S2 | 1F | R00 | ACF04 | 260 |  |  |  |  |  |  |  |  | MEP |  |  |  | 30 |  |  |  |  |  | 1S | M1F |  |  |  |  |  |
| S08PA22005C0 |  | SW-08 ; 1st Fix, Inst of Water supply pipe (ceiling) (Public Area) | 54d | 2011-10-08 | 2011-12-15 | S08PA22019C0 SS+12d, S08PA23001C0 |  |  |  |  | 62.2d | 53.7d | PLUMBING [1688.4 h]; Cost |  |  | S08PA22005C0 |  | SW | C | 08 | PA | ME | 220 | 05 | BILL 9 | B09 | S2 | 1F | R00 | ACF04 | 220 |  |  |  |  |  |  |  |  | MEP |  |  |  |  |  |  |  |  | 20 | 1S | M1F |  |  |  |  |  |
| S08PA27001C0 |  | SW-08 ; 1st Fix, Wiring/ Cabling work (Public Area) | 48d | 2011-11-22 | 2012-01-19 | S08PA26001C0, S08PA26013C0, S08PA27010C0 |  |  |  |  | 122.12d | 99d | ELECTRICAL [241.2 h]; Cost |  |  | S08PA27001C0 |  | SW | C | 08 | PA | ME | 270 | 01 | BILL 9 | B09 | S2 | 1F | R00 | ACF04 | 270 |  |  |  |  |  |  |  |  | MEP |  |  |  |  |  |  |  |  |  | 1S | M1F |  |  |  |  |  |
| S08PA23008C0 |  | SW-08 ; 1st Fix, Inst of VCD's/FD's (Public Area) | 48d | 2011-12-12 | 2012-02-08 | S08PA23023C0 |  |  |  |  | 106.83d | 83.7d | MECHANICAL [1111.2 h]; Cost |  |  | S08PA23008C0 |  | SW | C | 08 | PA | ME | 230 | 08 | BILL 9 | B09 | S2 | 1F | R00 | ACF04 | 230 |  |  |  |  |  |  |  |  | MEP |  |  |  |  |  |  |  |  |  | 1S | M1F |  |  |  |  |  |
| S08PA23009C0 |  | SW-08 ; 2nd Fix, Inst of VAV'S CHW connection (Public Area) | 42d | 2011-12-12 | 2012-01-31 | S08PA23017C0 |  |  |  |  | 64.53d | 0d | MECHANICAL [1018.8 h]; Cost |  |  | S08PA23009C0 |  | SW | C | 08 | PA | ME | 230 | 09 | BILL 9 | B09 | S2 | 2F | R00 | ACF07 | 230 |  |  |  |  |  |  |  |  | MEP |  |  |  |  |  |  |  |  |  | 2n |  |  |  |  |  |  |
| S08PA08103C0 |  | SW-08 ; Door Frames (Public Area) | 36d | 2011-12-22 | 2012-02-02 | S08PA09201C0, GNHE08101C0 FS+69d |  |  |  |  | 65.5d | 57d | ASSORTED DOORS [227 h]; Cost |  |  | S08PA08103C0 |  | SW | C | 08 | PA | DO | 081 | 03 | BILL 9 | B09 | S2 | DF | R00 | ACF06 | 081 |  |  |  |  |  |  |  |  |  |  |  |  |  |  |  |  |  |  |  |  | 316 | 947 | 08 |  |  |
| S08PA09203C0 |  | SW-08 ; Partitions early wall & 1st face (Public Area) | 36d | 2011-12-22 | 2012-02-02 | S08PA09201C0 |  |  |  |  | 20.5d | 12d | PARTITIONS [603 m]; PARTITIONS [4223 h]; Cost |  |  | S08PA09203C0 |  | SW | C | 08 | PA | PT | 092 | 03 | BILL 9 | B09 | S2 | 2F | R00 | ACF06 | 092 |  |  |  |  |  |  |  |  | GP |  |  |  | 0 |  |  |  |  |  |  | P1F | 314 | 945 |  |  |  |
| S08PA22011C0 |  | SW-08 ; 2nd Fix, Drainage/Water pipe (wall) (Public Area) | 42d | 2011-12-22 | 2012-02-11 | S08PA09201C0 |  |  |  |  | 8.5d | 0d | PLUMBING [310.8 h]; Cost |  |  | S08PA22011C0 |  | SW | C | 08 | PA | ME | 220 | 11 | BILL 9 | B09 | S2 | 2F | R00 | ACF07 | 220 |  |  |  |  |  |  |  |  | MEP |  |  |  |  |  |  |  |  |  | 2n |  |  |  |  |  |  |
| S08PA26009C0 |  | SW-08 ; 2nd Fix, Inst of Wall conduites (Public Area) | 42d | 2011-12-22 | 2012-02-11 | S08PA09201C0 |  |  |  |  | 8.5d | 0d | ELECTRICAL [447.6 h]; Cost |  |  | S08PA26009C0 |  | SW | C | 08 | PA | ME | 260 | 09 | BILL 9 | B09 | S2 | 2F | R00 | ACF07 | 260 |  |  |  |  |  |  |  |  | MEP |  |  |  |  |  |  |  |  |  | 2n |  |  |  |  |  |  |
| S08PA23015C0 |  | SW-08 ; 2nd Fix, Insulation of CHW pipe & Duct (Public Area) | 48d | 2012-01-31 | 2012-03-28 | S08PA23009C0, S08PA23017C0, S08PA23023C0 |  |  |  |  | 64.53d | 41.4d | MECHANICAL [3716.4 h]; Cost |  |  | S08PA23015C0 |  | SW | C | 08 | PA | ME | 230 | 15 | BILL 9 | B09 | S2 | 2F | R00 | ACF07 | 230 |  |  |  |  |  |  |  |  | MEP |  |  |  |  |  |  |  |  |  | 2n |  |  |  |  |  |  |
| S08PA01005C0 |  | SW-08 ; 2nd, Wall Inspection by Consultant (Public Area) | 6d | 2012-02-12 | 2012-02-18 | S08PA22011C0, S08PA26009C0 |  |  |  |  | 8.5d | 0d | Labor General [0.6 h]; Cost |  |  | S08PA01005C0 |  | SW | C | 08 | PA | ME | 010 | 05 | BILL 9 | B09 | S2 | WI | R00 | ACF07 | 010 |  |  |  |  |  |  |  |  | MEP |  |  |  | 0 |  |  |  |  |  | 2n |  |  |  |  |  |  |
| S08PA09205C0 |  | SW-08 ; Partitions Closing (Public Area) | 45d | 2012-02-19 | 2012-04-10 | S08PA01005C0, S08PA09203C0, S08PA22005C0, S08PA22019C0, SAFOA09212C1 FF, SAFCI22001R02 FS+72d, S08PA08103C0 FF, S08PA21117C0 |  |  |  |  | 8.5d | 0d | PARTITIONS [603 m]; PARTITIONS [5407 h]; Cost |  |  | S08PA09205C0 |  | SW | C | 08 | PA | PT | 092 | 05 | BILL 9 | B09 | S2 | FF | R00 | ACF06 | 092 |  |  |  |  |  |  |  |  | GP |  |  |  |  |  |  |  |  |  |  | P2F | 315 | 946 |  |  |  |
| S08PA09901C0 |  | SW-08 ; Wall Prime & 1st coat (Public Area) | 30d | 2012-04-11 | 2012-05-15 | S08PA09205C0 |  |  |  |  | 23.12d | 0d | WALL PAINT [856 h]; WALL PAINT [1068 m2]; Cost |  |  | S08PA09901C0 |  | SW | C | 08 | PA | PA | 099 | 01 | BILL 9 | B09 | S2 | 01 | R00 | ACF06 | 099 |  |  |  |  |  |  |  |  |  |  |  |  |  |  |  |  |  |  |  |  | 328 | 956 |  |  |  |
| S08PA26005C0 |  | SW-08 ; 2nd Fix, Wiring for Power/Lighting/Emergency (Public Area) | 42d | 2012-04-11 | 2012-05-29 | S08PA09205C0 |  |  |  |  | 95.25d | 0d | ELECTRICAL [241.2 h]; Cost |  |  | S08PA26005C0 |  | SW | C | 08 | PA | ME | 260 | 05 | BILL 9 | B09 | S2 | 2F | R00 | ACF07 | 260 |  |  |  |  |  |  |  |  | MEP |  |  |  |  |  |  |  |  |  | 2n |  |  |  |  |  |  |
| S08PA26007C0 |  | SW-08 ; 2nd Fix, Cable Pulling (Public Area) | 42d | 2012-04-11 | 2012-05-29 | S08PA09201C0 SS+6d, S08PA09205C0 |  |  |  |  | 137.12d | 114d | ELECTRICAL [1532.4 h]; Cost |  |  | S08PA26007C0 |  | SW | C | 08 | PA | ME | 260 | 07 | BILL 9 | B09 | S2 | 2F | R00 | ACF07 | 260 |  |  |  |  |  |  |  |  | MEP |  |  |  |  |  |  |  |  |  | 2n |  |  |  |  |  |  |
| S08PA26011C0 |  | SW-08 ; 2nd Fix, Inst of Equipment (DB) (Public Area) | 48d | 2012-04-11 | 2012-06-05 | S08PA09205C0 |  |  |  |  | 83.12d | 60d | ELECTRICAL [646.8 h]; Cost |  |  | S08PA26011C0 |  | SW | C | 08 | PA | ME | 260 | 11 | BILL 9 | B09 | S2 | 2F | R00 | ACF04 | 260 |  |  |  |  |  |  |  |  | MEP |  |  |  |  |  |  |  |  |  | 2n |  |  |  |  | E |  |
| S08PA26053C0 |  | SW-08 ; 2nd Fix, Wiring / Cabling (Public Area) | 42d | 2012-04-11 | 2012-05-29 | S08PA09203C0, S08PA09205C0 |  |  |  |  | 47.12d | 24d | ELECTRICAL [241.2 h]; Cost |  |  | S08PA26053C0 |  | SW | C | 08 | PA | ME | 260 | 53 | BILL 9 | B09 | S2 | 2F | R00 | ACF07 | 260 |  |  |  |  |  |  |  |  | MEP |  |  |  |  |  |  |  |  |  | 2n |  | 389 | 977 |  |  |  |
| S08PA05501C0 |  | SW-08 ; Handrails & balustrade (Public Area) | 36d | 2012-05-16 | 2012-06-27 | S08PA09901C0, SAFT1505509C0, SAFT105509C0, SAFT1105509C0, SAFT2305509C0 |  |  |  |  | 65.12d | 42d | SECONDARY STEEL [220 h]; Cost |  |  | S08PA05501C0 |  | SW | C | 08 | PA | SW | 055 | 01 | BILL 9 | B09 | S2 | 01 | R00 | ACF03 | a |  |  |  |  |  |  |  |  |  |  |  |  |  |  |  |  |  |  |  |  |  |  |  |  |  |
| S08PA09501C0 |  | SW-08 ; Ceiling Grid and Service Tile (Public Area) | 36d | 2012-05-16 | 2012-06-27 | S08PA09205C0 SS+15d, S08PA21117C0, S08PA23008C0, S08PA23009C0, S08PA23015C0, S08PA27001C0, SAFCI22002R02 FS+72d, S08PA26053C0 FF, S08PA09901C0 |  |  |  |  | 23.12d | 0d | CEILING GRID FOR GYPSUM [905.82 h]; CEILING GRID FOR GYPSUM [77.47 m2]; Cost |  |  | S08PA09501C0 |  | SW | C | 08 | PA | CE | 095 | 01 | BILL 9 | B09 | S2 | 01 | R00 | ACF06 | 095 |  |  |  |  |  |  |  |  |  |  |  |  |  |  |  |  |  |  |  |  | 323 | 952 |  |  | R3 |
| S08PA26015C0 |  | SW-08 ; Final Fix, Termination & Gladding of Cables (Public Area) | 36d | 2012-05-30 | 2012-07-11 | S08PA26005C0 |  |  |  |  | 95.25d | 66d | ELECTRICAL [85.2 h]; Cost |  |  | S08PA26015C0 |  | SW | C | 08 | PA | ME | 260 | 15 | BILL 9 | B09 | S2 | FF | R00 | ACF07 | 260 |  |  |  |  |  |  |  |  | MEP |  |  |  |  |  |  |  |  |  | FF |  |  |  |  |  |  |
| S08PA09601C0 |  | SW-08 ; Flooring (Rubber & etc) (Public Area) | 42d | 2012-06-28 | 2012-08-15 | S08PA09901C0, S08PA09501C0 |  |  |  |  | 23.12d | 0d | RUBBER FLOOR [56 h]; RUBBER FLOOR [131 m2]; Cost |  |  | S08PA09601C0 |  | SW | C | 08 | PA | FF | 096 | 01 | BILL 9 | B09 | S2 | 03 | R00 | ACF06 | RF |  |  |  |  |  |  |  |  |  |  |  |  |  |  |  |  |  |  |  |  | 326 | 955 |  |  |  |
| S08PA09602C0 |  | SW-08 ; Flooring (Stone) (Public Area) | 42d | 2012-06-28 | 2012-08-15 | S08PA09901C0, S08PA09501C0, S08PA05501C0 FF |  |  |  |  | 23.12d | 0d | STONE FLOOR [175 m2]; STONE FLOOR [160 h]; Cost |  |  | S08PA09601C0 |  | SW | C | 08 | PA | FF | 096 | 01 | BILL 9 | B09 | S2 | 09 | R00 | ACF06 | ST |  |  |  |  |  |  |  |  |  |  |  |  |  |  |  |  |  |  |  |  | 326 | 955 |  |  |  |
| S08PA09905C0 |  | SW-08 ; Ceiling Prime & 1st coat (Public Area) | 30d | 2012-06-28 | 2012-08-01 | S08PA09501C0 |  |  |  |  | 109d | 0d | CEILING PAINT [53 h]; CEILING PAINT [65 m2]; Cost |  |  | S08PA09905C0 |  | SW | C | 08 | PA | PA | 099 | 05 | BILL 9 | B09 | S2 | 01 | R00 | ACF06 | 099 |  |  |  |  |  |  |  |  |  |  |  |  |  |  |  |  |  |  |  |  | 330 | 958 |  |  |  |
| S08PA21115C0 |  | SW-08 ; 2nd Fix, Inst of Sprinkler droppers (Public Area) | 42d | 2012-06-28 | 2012-08-15 | S08PA09501C0 |  |  |  |  | 29.25d | 0d | MECHANICAL [1309.2 h]; Cost |  |  | S08PA21115C0 |  | SW | C | 08 | PA | ME | 211 | 15 | BILL 9 | B09 | S2 | 2F | R00 | ACF07 | 211 |  |  |  |  |  |  |  |  | MEP |  |  |  |  |  |  |  |  |  | 2n |  |  |  |  |  |  |
| S08PA23021C0 |  | SW-08 ; 2nd Fix, Inst of Flexible Duct & Plenum boxes (Public Area) | 42d | 2012-06-28 | 2012-08-15 | S08PA09205C0, S08PA09501C0 |  |  |  |  | 29.25d | 0d | MECHANICAL [166.8 h]; Cost |  |  | S08PA23021C0 |  | SW | C | 08 | PA | ME | 230 | 21 | BILL 9 | B09 | S2 | 2F | R00 | ACF07 | 230 |  |  |  |  |  |  |  |  | MEP |  |  |  |  |  |  |  |  |  | 2n |  |  |  |  |  |  |
| S08PA26017C0 |  | SW-08 ; Final Fix, Inst of Ceiling rose (Public Area) | 36d | 2012-06-28 | 2012-08-08 | S08PA09501C0 |  |  |  |  | 29.25d | 0d | ELECTRICAL [36 h]; Cost |  |  | S08PA26017C0 |  | SW | C | 08 | PA | ME | 260 | 17 | BILL 9 | B09 | S2 | FF | R00 | ACF07 | 260 |  |  |  |  |  |  |  |  | MEP |  |  |  |  |  |  |  |  |  | FF |  |  |  |  |  |  |
| S08PA27002C0 |  | SW-08 ; 2nd Fix, Wiring Droppers (Public Area) | 42d | 2012-06-28 | 2012-08-15 | S08PA09501C0 |  |  |  |  | 29.25d | 0d | ELECTRICAL [241.2 h]; Cost |  |  | S08PA27002C0 |  | SW | C | 08 | PA | ME | 270 | 02 | BILL 9 | B09 | S2 | 2F | R00 | ACF07 | 270 |  |  |  |  |  |  |  |  | MEP |  |  |  |  |  |  |  |  |  | 2n |  |  |  |  |  |  |
| S08PA27020C0 |  | SW-08 ; 2nd Fix, Inst of ELV Equipment (Panels) (Public Area) | 54d | 2012-06-28 | 2012-09-01 | S08PA09205C0, S08PA09501C0 |  |  |  |  | 59.12d | 36d | ELECTRICAL [1868.4 h]; Cost |  |  | S08PA27020C0 |  | SW | C | 08 | PA | ME | 270 | 20 | BILL 9 | B09 | S2 | 2F | R00 | ACF04 | 270 |  |  |  |  |  |  |  |  | MEP |  |  |  |  |  |  |  |  |  | 2n |  |  |  |  | E |  |
| S08PA09903C0 |  | SW-08 ; Wall Final Paint (Public Area) | 30d | 2012-08-02 | 2012-09-08 | S08PA09901C0, S08PA09905C0 |  |  |  |  | 109d | 60d | WALL PAINT [462 h]; WALL PAINT [575 m2]; Cost |  |  | S08PA09903C0 |  | SW | C | 08 | PA | PA | 099 | 03 | BILL 9 | B09 | S2 | 02 | R00 | ACF06 | 099 |  |  |  |  |  |  |  |  |  |  |  |  |  |  |  |  |  |  |  |  | 329 | 957 |  |  |  |
| S08PA26003C0 |  | SW-08 ; Final Fix, Inst of Light fittings (Public Area) | 42d | 2012-08-09 | 2012-09-29 | S08PA09501C0, S08PA26017C0 |  |  |  |  | 29.25d | 0d | ELECTRICAL [4813.2 h]; Cost |  |  | S08PA26003C0 |  | SW | C | 08 | PA | ME | 260 | 03 | BILL 9 | B09 | S2 | FF | R00 | ACF07 | 260 |  |  |  |  |  |  |  |  | MEP |  |  |  |  |  |  |  |  |  | FF |  |  |  |  |  |  |
| S08PA08107C0 |  | SW-08 ; Doors (Public Area) | 36d | 2012-08-16 | 2012-09-29 | S08PA08103C0, S08PA09901C0, S08PA09601C0, S08PA09602C0 |  |  |  |  | 63d | 0d | ASSORTED DOORS [550 h]; ASSORTED DOORS [55 no]; Cost |  |  | S08PA08107C0 |  | SW | C | 08 | PA | DO | 081 | 07 | BILL 9 | B09 | S2 | DR | R00 | ACF06 | 081 |  |  |  |  |  |  |  |  |  |  |  |  |  |  |  |  |  |  |  |  | 317 | 948 | 08 |  |  |
| S08PA09701C0 |  | SW-08 ; Wall finishes (ST, WD, WC) (Public Area) | 48d | 2012-08-16 | 2012-10-13 | S08PA26011C0, S08PA27020C0 FF, SVT3414211C0, SVT4114211C0, SVT4314211C0, TVT3114211C0, TVT3214255C0, TVT3314245C0, SAFCI22002R02 FS+170d, S08PA09602C0, S08PA09601C0 |  |  |  |  | 23.12d | 0d | ASSORTED WALL FINISH [952 h]; ASSORTED WALL FINISH [1094 m2]; Cost |  |  | S08PA09701C0 |  | SW | C | 08 | PA | WF | 097 | 01 | BILL 9 | B09 | S2 | 01 | R00 | ACF06 | 097 |  |  |  |  |  |  |  |  |  |  |  |  |  |  |  |  |  |  |  |  | 105 | 1002 |  |  |  |
| S08PA21113C0 |  | SW-08 ; Final Fix, Inst of Sprinklers head/ Extinguisher (Public Area) | 36d | 2012-08-16 | 2012-09-29 | S08PA09501C0, S08PA21115C0 |  |  |  |  | 29.25d | 0d | MECHANICAL [237.6 h]; Cost |  |  | S08PA21113C0 |  | SW | C | 08 | PA | ME | 211 | 13 | BILL 9 | B09 | S2 | FF | R00 | ACF07 | 211 |  |  |  |  |  |  |  |  | MEP |  |  |  |  |  |  |  |  |  | FF |  |  |  |  |  |  |
| S08PA23019C0 |  | SW-08 ; Final Fix, Inst of Grilles & Diffusers (Public Area) | 36d | 2012-08-16 | 2012-09-29 | S08PA09501C0, S08PA23021C0 |  |  |  |  | 29.25d | 0d | MECHANICAL [835.2 h]; Cost |  |  | S08PA23019C0 |  | SW | C | 08 | PA | ME | 230 | 19 | BILL 9 | B09 | S2 | FF | R00 | ACF07 | 230 |  |  |  |  |  |  |  |  | MEP |  |  |  |  |  |  |  |  |  | FF |  |  |  |  |  |  |
| S08PA27030C0 |  | SW-08 ; Final Fix, Inst of ELV devise (Detector/Speaker) (Public Area) | 36d | 2012-08-16 | 2012-09-29 | S08PA09501C0, S08PA27002C0 |  |  |  |  | 29.25d | 0d | ELECTRICAL [1348.8 h]; Cost |  |  | S08PA27030C0 |  | SW | C | 08 | PA | ME | 270 | 30 | BILL 9 | B09 | S2 | FF | R00 | ACF07 | 270 |  |  |  |  |  |  |  |  | MEP |  |  |  |  |  |  |  |  |  | FF |  |  |  |  |  |  |
| S08PA01006C0 |  | SW-08 ; 2nd, Ceiling Inspection by Consultants (Public Area) | 5.88d | 2012-09-30 | 2012-10-06 | S08PA21115C0, S08PA23009C0, S08PA23015C0, S08PA27002C0, S08PA09501C0, S08PA21113C0, S08PA23019C0, S08PA26003C0, S08PA26017C0, S08PA27030C0, S08PA26015C0 |  |  |  |  | 29.25d | 6.12d | Labor General [0.6 h]; Cost |  |  | S08PA01006C0 |  | SW | C | 08 | PA | ME | 010 | 06 | BILL 9 | B09 | S2 | CI | R00 | ACF07 | 010 |  |  |  |  |  |  |  |  | MEP |  |  |  |  |  |  |  |  |  | 2n |  |  |  |  |  |  |
| S08PA08709C0 |  | SW-08 ; Ironmongery (Public Area) | 28d | 2012-09-30 | 2012-11-03 | S08PA08107C0 |  |  |  |  | 63d | 39.88d | IRONMONGERY [440 h]; IRONMONGERY [44 no]; Cost |  |  | S08PA08709C0 |  | SW | C | 08 | PA | DO | 087 | 09 | BILL 9 | B09 | S2 | IM | R00 | ACF06 | 087 |  |  |  |  |  |  |  |  |  |  |  |  |  |  |  |  |  |  |  |  | 322 | 951 | 08 |  |  |

| ID | WBS | Activity | Duration | Start | Finish | Predecessors | Complete | Remaining | Planned start | Planned finish | Total float | Free float | Calendar | Resources | Cost | Actual cost | Change Order # | NEW ACTIVITY ID | change id | CCAD BUILDING(SET) | CCAD PHASE(SET) | CCAD FLOOR(SET) | CCAD ZONE(SET) | CCAD WORK(SET) | CCAD SECTION(SET) | CCAD SERIAL No.(SET) | CCAD CBS(SET) | CCAD BILL(SET) | CCAD HANDOVER(SET) | CCAD TAG(SET) | CCAD REV(SET) | CCADACF (SET) | CCAD SSCF | R3 Finish | CCAD DIVISION(SET) | CCAD SUB ZONE MEP(SET) | CCAD CSA | user_number8 | user_integer1 | user_integer2 | user_number7 | P_811 | P_711 | U% | Act Selector % | R3 Partitions | CCAD MEQ |
| --- | --- | --- | --- | --- | --- | --- | --- | --- | --- | --- | --- | --- | --- | --- | --- | --- | --- | --- | --- | --- | --- | --- | --- | --- | --- | --- | --- | --- | --- | --- | --- | --- | --- | --- | --- | --- | --- | --- | --- | --- | --- | --- | --- | --- | --- | --- | --- |
| S08PA09503C0 |  | SW-08 ; Ceiling closure - ACT/Gypsum (Public Area) | 25.88d | 2012-10-14 | 2012-11-14 | S08PA01006C0, S08PA21115C0, S08PA26005C0, S08PA27001C0, S08PA27002C0, SAFOA09511C1 FF, S08PA09701C0, S08PA23021C0, S08PA26007C0 |  |  |  |  | 23.12d | 0d |  | ASSORTED CEILING FINISH [853.62 h]; CEILING GYPSUM [25.42 h]; ASSORTED CEILING FINISH [1388 m2]; CEILING GYPSUM [77 m2]; Cost |  |  | 324 | 953 | S08PA09503C0 | SW | C | 08 | PA | CE | 095 | 03 | BILL 9 | B09 | S2 | 02 | R00 | ACF06 | 095 | R3 |  |  |  |  |  |  |  |  |  |  |  |  |  |
| S08PA11001C0 |  | SW-08 ; Wall Protection (WP, CG, WG, FCG) (Public Area) | 24d | 2012-10-14 | 2012-11-12 | S08PA09701C0, S08PA09903C0 SS |  |  |  |  | 55d | 31.88d |  | Labor General [2 h]; Cost |  |  | 326 | 1001 | S08PA11001C0 | SW | C | 08 | PA | WF | 110 | 01 | BILL 9 | B09 | S2 | 03 | R00 | ACF08 | b |  |  |  |  |  |  |  |  |  |  |  |  |  |  |
| S08PA11009C0 |  | SW-08 ; Signage (Public Area) | 13.75d | 2012-10-14 | 2012-10-31 | S08PA09701C0 |  |  |  |  | 65.25d | 42.12d |  | SIGNAGES [170 h]; SIGNAGES [169.85 no]; Cost |  |  | 322 | 951 | S08PA11009C0 | SW | C | 08 | PA | SA | 110 | 09 | BILL 9 | B09 | S2 | 09 | R00 | ACF08 | c |  | 08 |  |  |  |  |  |  |  |  |  |  |  |  |
| S08PA09907C0 |  | SW-08 ; Ceiling Final paint (Public Area) | 18d | 2012-11-14 | 2012-12-08 | S08PA09601C0, S08PA09905C0, S08PA09602C0, S08PA09503C0 |  |  |  |  | 35.12d | 12d |  | CEILING PAINT [29 h]; CEILING PAINT [35 m2]; Cost |  |  | 331 | 959 | S08PA09907C0 | SW | C | 08 | PA | PA | 099 | 07 | BILL 9 | B09 | S2 | 02 | R00 | ACF06 | 099 |  |  |  |  |  |  |  |  |  |  |  |  |  |  |
| S08PA26019C0 |  | SW-08 ; Final Fix, Inst of Switch/Sockets (Public Area) | 18d | 2012-11-14 | 2012-12-08 | S08PA09901C0, S08PA09503C0 |  |  |  |  | 23.12d | 0d |  | ELECTRICAL [256.8 h]; Cost |  |  |  |  | S08PA26019C0 | SW | C | 08 | PA | ME | 260 | 19 | BILL 9 | B09 | S2 | FF | R00 | ACF07 | 260 |  |  | FF | MEP |  |  |  |  |  |  |  |  |  |  |
|  | 10 | **Precommissioning Tesing & snagging (Public Area)** |  | 2012-12-08 | 2013-01-20 |  |  |  |  |  |  |  |  |  |  |  |  |  |  |  |  |  |  |  |  |  |  |  |  |  |  |  |  |  |  |  |  |  |  |  |  |  |  |  |  |  |  |
| S08TS01801C0 |  | SW-08 ; MEP de-snag, FIREM sign-off | 12d | 2012-12-08 | 2012-12-22 | S08PA26015C0, S08PA21113C0, S08PA23019C0, S08PA26017C0, S08PA26003C0, S08PA27030C0, S08PA26019C0, S08PA09503C0 |  |  |  |  | 23.12d | 0d |  | TESTING & COMMISSIONING [2040 h]; Cost |  |  |  |  | S08TS01801C0 | SW | C | 08 | TS | SC | 018 | 01 | BILL 9 | B09 | S2 | 01 | R00 | ACF07 | 018 |  |  |  |  |  |  |  |  |  |  |  |  |  |  |
| S08TS01805C0 |  | SW-08 ; Touch-up & Clean / JV inspection /CIR /De-snag | 18d | 2012-12-22 | 2013-01-13 | S08PA08709C0, S08PA09601C0, S08PA09701C0, S08PA09903C0, S08PA09907C0, S08PA11001C0, S08PA11009C0, S08TS01801C0, SAFT1105509C0, SAFT2305509C0, S08PA05501C0, S08PA09602C0, S08PA09503C0, S08F109672C1, S08F109673C1 |  |  |  |  | 23.12d | 0d |  | TESTING & COMMISSIONING [128 h]; Cost |  |  |  |  | S08TS01802C0 | SW | C | 08 | TS | SC | 018 | 02 | BILL 9 | B09 | S2 | 02 | R00 | ACF07 | 018 |  |  |  |  |  |  |  |  |  |  |  |  |  |  |
| S08TS01808C0 |  | SW-08 ; Consultant's final de-snag inspection | 7d | 2013-01-13 | 2013-01-20 | S08TS01805C0 |  |  |  |  | 28.12d | 9.12d | R00-C02, Calendar day | Labor General [0.5 h]; Cost |  |  |  |  | S08TS01803C0 | SW | C | 08 | TS | SC | 018 | 03 | BILL 9 | B09 | S2 | 03 | R00 | ACF07 | 018 |  |  |  |  |  |  |  |  |  |  |  |  |  |  |
|  | 03 | **Faculty Office-1** |  | 2011-07-10 | 2013-01-29 |  |  |  |  |  |  |  |  |  |  |  |  |  |  |  |  |  |  |  |  |  |  |  |  |  |  |  |  |  |  |  |  |  |  |  |  |  |  |  |  |  |  |
| S08F109201C0 |  | SW-08 ; Metal Studs (Faculty Office) | 45d | 2011-07-10 A | 2011-12-21 | S08F123001C0, SAFCI09201R02 FS+72d, S08CO04406C0 FF, S08CO04405C0 FF | 20% | 36d | 2011-07-30 | 2011-09-22 | 15d | 0d |  | PARTITIONS [6438 h]; PARTITIONS - Metal Studs [719 m]; Cost |  |  | 313 | 944 | S08F109201C0 | SW | C | 08 | F1 | PT | 092 | 01 | BILL 9 | B09 | S2 | 1F | R00 | ACF06 | 092 |  |  |  | GP | 0 | 0 | 0 | 0 | 10 | 5 | 20 | PMS | R3 |  |
| S08F121111C0 |  | SW-08 ; 1st Fix, Inst of Sprinkler main pipe (Faculty Office) | 66d | 2011-07-10 A | 2011-11-10 | S08F123001C0 SS | 50% | 33d | 2011-10-10 | 2012-01-02 | 62.7d | 6.3d |  | MECHANICAL [793.2 h]; Cost [43268 AED] | 43,267.97 | 21,633.98 |  |  | S08F121111C0 | SW | C | 08 | F1 | ME | 211 | 11 | BILL 9 | B09 | S2 | 1F | R00 | ACF04 | 211 |  |  | 1S | MEP | 0 | 0 | 0 | 0 | 30 | 10 | 40 | M1F |  |  |
| S08F121117C0 |  | SW-08 ; 1st Fix, Inst of Sprinkler branch pipe (Faculty Office) | 66d | 2011-07-10 A | 2012-01-30 | S08F109201C0, S08F121111C0 | 50% | 33d | 2011-11-29 | 2012-02-18 | 105d | 90d |  | MECHANICAL [682.8 h]; Cost [37306.8 AED] | 37,306.8 | 18,653.4 |  |  | S08F121117C0 | SW | C | 08 | F1 | ME | 211 | 17 | BILL 9 | B09 | S2 | 1F | R00 | ACF04 | 211 |  |  | 1S | MEP | 0 | 0 | 0 | 0 | 30 | 10 | 40 | M1F |  |  |
| S08F122019C0 |  | SW-08 ; 1st Fix, Inst of Drainage pipe (ceiling) (Faculty Office) | 66d | 2011-07-10 A | 2011-12-06 | S08F123001C0, S08F126013C0 SS+12d | 30% | 46.2d | 2011-09-12 | 2011-12-04 | 68.7d | 0d |  | PLUMBING [310.8 h]; Cost [16770.4 AED] | 16,770.39 | 5,031.12 |  |  | S08F122019C0 | SW | C | 08 | F1 | ME | 220 | 19 | BILL 9 | B09 | S2 | 1F | R00 | ACF04 | 220 |  |  | 1S | MEP | 0 | 0 | 0 | 0 | 30 | 15 | 30 | M1F |  |  |
| S08F123001C0 |  | SW-08 ; 1st Fix, Inst. of Supports for MEP (Faculty Office) | 42d | 2011-07-10 A | 2011-10-08 | S08S107807C0, S08S207807C0 | 85% | 6.3d | 2011-07-02 | 2011-08-20 | 38.7d | 0d |  | MECHANICAL [536.4 h]; Cost [30275.7 AED] | 30,275.67 | 25,734.32 |  |  | S08F123001C0 | SW | C | 08 | F1 | ME | 230 | 01 | BILL 9 | B09 | S2 | 1F | R00 | ACF04 | 230 |  |  | 1S | MEP |  |  |  |  |  |  | 85 | M1F |  |  |
| S08F126013C0 |  | SW-08 ; 1st Fix, Inst of Cable Tray (Faculty Office) | 60d | 2011-08-10 A | 2011-12-15 | S08F123001C0, S08F127010C0 SS+10d, S08S107807C0, S08S207807C0 | 10% | 54d | 2011-09-24 | 2011-12-08 | 68.7d | 0d |  | ELECTRICAL [231.6 h]; Cost [13047.4 AED] | 13,047.37 | 1,304.74 |  |  | S08F126013C0 | SW | C | 08 | F1 | ME | 260 | 13 | BILL 9 | B09 | S2 | 1F | R00 | ACF04 | 260 |  |  | 1S | MEP | 0 | 0 | 0 | 0 | 10 | 0 | 10 | M1F |  |  |
| S08F127010C0 |  | SW-08 ; 1st Fix, Inst of Trunking for ELV system (Faculty Office) | 60d | 2011-08-10 A | 2011-10-15 | S08F123001C0, S08F126001C0 SS+14d, S08S107807C0, S08S207807C0 | 90% | 6d | 2011-09-12 | 2011-11-24 | 68.7d | 0d |  | ELECTRICAL [991.2 h]; Cost [51056.8 AED] | 51,056.81 | 45,951.13 |  |  | S08F127010C0 | SW | C | 08 | F1 | ME | 270 | 10 | BILL 9 | B09 | S2 | 1F | R00 | ACF04 | 270 |  |  | 1S | MEP | 0 | 0 | 0 | 0 | 10 | 0 |  | M1F |  |  |
| S08F123017C0 |  | SW-08 ; 1st Fix, Inst of CHW pipe (Faculty Office) | 54d | 2011-09-05 A | 2011-12-12 | S08F121111C0 SS+14d, S08F123001C0 | 5% | 51.3d | 2011-10-24 | 2012-01-02 | 56.4d | 0d |  | MECHANICAL [1687.2 h]; Cost [92145.2 AED] | 92,145.18 | 4,607.26 |  |  | S08F123017C0 | SW | C | 08 | F1 | ME | 230 | 17 | BILL 9 | B09 | S2 | 1F | R00 | ACF04 | 230 |  |  | 1S | MEP |  |  |  |  |  |  |  | M1F |  |  |
| S08F123023C0 |  | SW-08 ; 1st Fix, Inst of Main Ducting (Faculty Office) | 60d | 2011-09-05 A | 2011-12-08 | S08F123001C0, S08F123017C0 SS+10d | 20% | 48d | 2011-11-05 | 2012-01-21 | 101.7d | 0d |  | MECHANICAL [6650.4 h]; Cost [363211 AED] | 363,210.66 | 72,642.13 |  |  | S08F123023C0 | SW | C | 08 | F1 | ME | 230 | 23 | BILL 9 | B09 | S2 | 1F | R00 | ACF04 | 230 |  |  | 1S | MEP |  |  |  |  |  |  | 15 | M1F |  |  |
| S08F126001C0 |  | SW-08 ; 1st Fix, Inst of Trunking/Conduiting (Faculty Office) | 48d | 2011-09-05 A | 2011-10-13 | S08F123001C0, S08S107807C0, S08S207807C0 | 90% | 4.8d | 2011-10-24 | 2011-12-25 | 68.7d | 0d |  | ELECTRICAL [447.6 h]; Cost [24105.1 AED] | 24,105.11 | 21,694.6 |  |  | S08F126001C0 | SW | C | 08 | F1 | ME | 260 | 01 | BILL 9 | B09 | S2 | 1F | R00 | ACF04 | 260 |  |  | 1S | MEP |  |  |  |  |  |  |  | M1F |  |  |
| S08F122005C0 |  | SW-08 ; 1st Fix, Inst of Water supply pipe (ceiling) (Faculty Office) | 54d | 2011-10-08 | 2011-12-15 | S08F122019C0 SS+10d, S08F123001C0 |  |  |  |  | 68.7d | 53.7d |  | PLUMBING [1688.4 h]; Cost |  |  |  |  | S08F122005C0 | SW | C | 08 | F1 | ME | 220 | 05 | BILL 9 | B09 | S2 | 1F | R00 | ACF04 | 220 |  |  | 1S | MEP |  |  |  |  |  |  |  | M1F |  |  |
| S08F122007C0 |  | SW-08 ; 1st Fix, Inst of Medical Gas pipe (Faculty Office) | 48d | 2011-10-08 | 2011-12-08 | S08F121111C0 SS+14d, S08F123001C0 |  |  |  |  | 74.7d | 59.7d |  | PLUMBING [187.2 h]; Cost |  |  |  |  | S08F122007C0 | SW | C | 08 | F1 | ME | 220 | 07 | BILL 9 | B09 | S2 | 1F | R00 | ACF04 | 220 |  |  | 1S | MEP |  |  |  |  |  |  |  | M1F |  |  |
| S08F123008C0 |  | SW-08 ; 1st Fix, Inst of VCD's/FD's (Faculty Office) | 48d | 2011-12-08 | 2012-02-05 | S08F123023C0 |  |  |  |  | 101.7d | 86.7d |  | MECHANICAL [1111.2 h]; Cost |  |  |  |  | S08F123008C0 | SW | C | 08 | F1 | ME | 230 | 08 | BILL 9 | B09 | S2 | 1F | R00 | ACF04 | 230 |  |  | 1S | MEP |  |  |  |  |  |  |  | M1F |  |  |
| S08F123009C0 |  | SW-08 ; 2nd Fix, Inst of VAV'S CHW connection (Faculty Office) | 42d | 2011-12-12 | 2012-01-31 | S08F123017C0 |  |  |  |  | 56.4d | 0d |  | MECHANICAL [1018.8 h]; Cost |  |  |  |  | S08F123009C0 | SW | C | 08 | F1 | ME | 230 | 09 | BILL 9 | B09 | S2 | 2F | R00 | ACF07 | 230 |  |  | 2n | MEP |  |  |  |  |  |  |  |  |  |  |
| S08F127001C0 |  | SW-08 ; 1st Fix, Wiring/ Cabling work (Faculty Office) | 48d | 2011-12-15 | 2012-02-12 | S08F126001C0, S08F126013C0, S08F127010C0 |  |  |  |  | 95.7d | 80.7d |  | ELECTRICAL [241.2 h]; Cost |  |  |  |  | S08F127001C0 | SW | C | 08 | F1 | ME | 270 | 01 | BILL 9 | B09 | S2 | 1F | R00 | ACF04 | 270 |  |  | 1S | MEP |  |  |  |  |  |  |  | M1F |  |  |
| S08F108103C0 |  | SW-08 ; Door Frames (Faculty Office) | 36d | 2011-12-22 | 2012-02-02 | S08F109201C0, GNHE08101C0 FS+69d |  |  |  |  | 72d | 57d |  | ASSORTED DOORS [256 h]; Cost |  |  | 316 | 947 | S08F108103C0 | SW | C | 08 | F1 | DO | 081 | 03 | BILL 9 | B09 | S2 | DF | R00 | ACF06 | 081 |  | 08 |  |  |  |  |  |  |  |  |  |  |  |  |
| S08F109203C0 |  | SW-08 ; Partitions 1st face (Faculty Office) | 36d | 2011-12-22 | 2012-02-02 | S08F109201C0 |  |  |  |  | 27d | 12d |  | PARTITIONS [719 m]; PARTITIONS [5029 h]; Cost |  |  | 314 | 945 | S08F109203C0 | SW | C | 08 | F1 | PT | 092 | 03 | BILL 9 | B09 | S2 | 2F | R00 | ACF06 | 092 |  |  |  | GP |  |  |  |  |  |  |  | P1F |  |  |
| S08F122011C0 |  | SW-08 ; 2nd Fix, Drainage/Water pipe (wall) (Faculty Office) | 42d | 2011-12-22 | 2012-02-11 | S08F109201C0 |  |  |  |  | 15d | 0d |  | PLUMBING [310.8 h]; Cost |  |  |  |  | S08F122011C0 | SW | C | 08 | F1 | ME | 220 | 11 | BILL 9 | B09 | S2 | 2F | R00 | ACF07 | 220 |  |  | 2n | MEP |  |  |  |  |  |  |  |  |  |  |
| S08F122015C0 |  | SW-08 ; 2nd Fix, Medical Gas pipe (Faculty Office) | 42d | 2011-12-22 | 2012-02-11 | S08F109201C0, S08F122007C0 SS |  |  |  |  | 15d | 0d |  | PLUMBING [187.2 h]; Cost |  |  |  |  | S08F122015C0 | SW | C | 08 | F1 | ME | 220 | 15 | BILL 9 | B09 | S2 | 2F | R00 | ACF07 | 220 |  |  | 2n | MEP |  |  |  |  |  |  |  |  |  |  |
| S08F126009C0 |  | SW-08 ; 2nd Fix, Inst of Wall conduites (Faculty Office) | 42d | 2011-12-22 | 2012-02-11 | S08F109201C0 |  |  |  |  | 15d | 0d |  | ELECTRICAL [447.6 h]; Cost |  |  |  |  | S08F126009C0 | SW | C | 08 | F1 | ME | 260 | 09 | BILL 9 | B09 | S2 | 2F | R00 | ACF07 | 260 |  |  | 2n | MEP |  |  |  |  |  |  |  |  |  |  |
| S08F140302C0 |  | SW-08 ; 2nd Fix, Pneumatic tube (Faculty Office) | 42d | 2011-12-22 | 2012-02-11 | S08F109201C0 |  |  |  |  | 15d | 0d |  | MECHANICAL [1036.8 h]; Cost |  |  |  |  | S08F140302C0 | SW | C | 08 | F1 | ME | 403 | 02 | BILL 9 | B09 | S2 | 2F | R00 | ACF07 | 403 |  |  | 2n | MEP |  |  |  |  |  |  |  |  |  |  |
| S08F123015C0 |  | SW-08 ; 2nd Fix, Insulation of CHW pipe & Duct (Faculty Office) | 48d | 2012-01-31 | 2012-03-28 | S08F123009C0, S08F123017C0, S08F123023C0 |  |  |  |  | 56.4d | 41.4d |  | MECHANICAL [3716.4 h]; Cost |  |  |  |  | S08F123015C0 | SW | C | 08 | F1 | ME | 230 | 15 | BILL 9 | B09 | S2 | 2F | R00 | ACF07 | 230 |  |  | 2n | MEP |  |  |  |  |  |  |  |  |  |  |
| S08F101005C0 |  | SW-08 ; 2nd, Wall Inspection by Consultant (Faculty Office) | 6d | 2012-02-12 | 2012-02-18 | S08F122011C0, S08F122015C0, S08F126009C0, S08F140302C0 |  |  |  |  | 15d | 0d |  | Labor General [0.6 h]; Cost |  |  |  |  | S08F101005C0 | SW | C | 08 | F1 | ME | 010 | 05 | BILL 9 | B09 | S2 | WI | R00 | ACF07 | 010 |  |  | 2n | MEP |  |  |  |  |  |  |  |  |  |  |
| S08F109205C0 |  | SW-08 ; Partitions Closing (Faculty Office) | 45d | 2012-02-19 | 2012-04-10 | S08F101005C0, S08F109203C0, S08F122005C0, S08F122019C0, SAFOA09212C1 FF, S08F108103C0 FF, SAFCI22001R20 FS+72d |  |  |  |  | 15d | 0d |  | PARTITIONS [719 m]; PARTITIONS [6438 h]; Cost |  |  | 315 | 946 | S08F109205C0 | SW | C | 08 | F1 | PT | 092 | 05 | BILL 9 | B09 | S2 | FF | R00 | ACF06 | 092 |  |  |  | GP |  |  |  |  |  |  |  | P2F | R3 |  |
| S08F107103C0 |  | SW-08 ; Waterproofing (Faculty Office) | 12d | 2012-04-11 | 2012-04-24 | S08F108103C0, S08F109205C0 |  |  |  |  | 99d | 0d |  | THERMAL & MOISTURE [272 h]; THERMAL & MOISTURE [1780 m2]; Cost |  |  | 105 | 999 | S08F107103C0 | SW | C | 08 | F1 | FF | 071 | 03 | BILL 9 | B09 | S2 | 01 | R00 | ACF03 | 071 |  |  |  |  |  |  |  |  |  |  |  |  |  |  |
| S08F109901C0 |  | SW-08 ; Wall Prime & 1st coat (Faculty Office) | 30d | 2012-04-11 | 2012-05-15 | S08F109205C0 |  |  |  |  | 15d | 0d |  | WALL PAINT [965 h]; WALL PAINT [1204 m2]; Cost |  |  | 328 | 956 | S08F109901C0 | SW | C | 08 | F1 | PA | 099 | 01 | BILL 9 | B09 | S2 | 01 | R00 | ACF06 | 099 |  |  |  |  |  |  |  |  |  |  |  |  |  |  |
| S08F126005C0 |  | SW-08 ; 2nd Fix, Wiring for Power/Lighting/Emergency (Faculty Office) | 42d | 2012-04-11 | 2012-05-29 | S08F109205C0 |  |  |  |  | 99d | 0d |  | ELECTRICAL [241.2 h]; Cost |  |  |  |  | S08F126005C0 | SW | C | 08 | F1 | ME | 260 | 05 | BILL 9 | B09 | S2 | 2F | R00 | ACF07 | 260 |  |  | 2n | MEP |  |  |  |  |  |  |  |  |  |  |
| S08F126007C0 |  | SW-08 ; 2nd Fix, Cable Pulling (Faculty Office) | 42d | 2012-04-11 | 2012-05-29 | S08F109201C0 SS+6d, S08F109205C0 |  |  |  |  | 141d | 126d |  | ELECTRICAL [1532.4 h]; Cost |  |  |  |  | S08F126007C0 | SW | C | 08 | F1 | ME | 260 | 07 | BILL 9 | B09 | S2 | 2F | R00 | ACF07 | 260 |  |  | 2n | MEP |  |  |  |  |  |  |  |  |  |  |
| S08F126011C0 |  | SW-08 ; 2nd Fix, Inst of Equipment (DB) (Faculty Office) | 48d | 2012-04-11 | 2012-06-05 | S08F109205C0 |  |  |  |  | 81d | 60d |  | ELECTRICAL [646.8 h]; Cost |  |  |  |  | S08F126011C0 | SW | C | 08 | F1 | ME | 260 | 11 | BILL 9 | B09 | S2 | 2F | R00 | ACF04 | 260 |  |  | 2n | MEP |  |  |  |  |  |  |  |  |  | E |
| S08F126053C0 |  | SW-08 ; 2nd Fix, Wiring / Cabling (Faculty Office) | 42d | 2012-04-11 | 2012-05-29 | S08F109203C0, S08F109205C0 |  |  |  |  | 39d | 24d |  | ELECTRICAL [241.2 h]; Cost |  |  | 389 | 977 | S08F126053C0 | SW | C | 08 | F1 | ME | 260 | 53 | BILL 9 | B09 | S2 | 2F | R00 | ACF07 | 260 |  |  | 2n | MEP |  |  |  |  |  |  |  |  |  |  |
| S08F127020C0 |  | SW-08 ; 2nd Fix, Inst of ELV Equipment (Panels) (Faculty Office) | 54d | 2012-04-11 | 2012-06-12 | S08F109205C0 |  |  |  |  | 75d | 54d |  | ELECTRICAL [1868.4 h]; Cost |  |  |  |  | S08F127020C0 | SW | C | 08 | F1 | ME | 270 | 20 | BILL 9 | B09 | S2 | 2F | R00 | ACF04 | 270 |  |  | 2n | MEP |  |  |  |  |  |  |  |  |  | E |
| S08F109305C0 |  | SW-08 ; CeramSW floor tile (Faculty Office) | 42d | 2012-04-25 | 2012-06-12 | S08F107103C0 |  |  |  |  | 99d | 0d |  | CERAMIC FLOOR TILES [336 h]; CERAMIC FLOOR TILES [187 m2]; Cost |  |  | 106 | 1000 | S08F109305C0 | SW | C | 08 | F1 | FF | 093 | 05 | BILL 9 | B09 | S2 | 02 | R00 | ACF06 | CT |  |  |  |  |  |  |  |  |  |  |  |  |  |  |
| S08F105501C0 |  | SW-08 ; Handrails & balustrade (Faculty Office) | 36d | 2012-05-16 | 2012-06-27 | S08F109901C0 |  |  |  |  | 57d | 42d |  | SECONDARY STEEL [249 h]; Cost |  |  |  |  | S08F105501C0 | SW | C | 08 | F1 | SW | 055 | 01 | BILL 9 | B09 | S2 | 01 | R00 | ACF03 | a |  |  |  |  |  |  |  |  |  |  |  |  |  |  |
| S08F109501C0 |  | SW-08 ; Ceiling Grid and Service Tile (Faculty Office) | 36d | 2012-05-16 | 2012-06-27 | S08F109205C0, S08F121117C0, S08F123008C0, S08F123009C0, S08F123015C0, S08F127001C0, SAFCI22002R02 FS+72d, S08F126053C0 FF, S08F109901C0 |  |  |  |  | 15d | 0d |  | CEILING GRID FOR GYPSUM [1022.7 h]; CEILING GRID FOR GYPSUM [87.33 m2]; Cost |  |  | 323 | 952 | S08F109501C0 | SW | C | 08 | F1 | CE | 095 | 01 | BILL 9 | B09 | S2 | 01 | R00 | ACF06 | 095 | R3 |  |  |  |  |  |  |  |  |  |  |  |  |  |
| S08F140303C0 |  | SW-08 ; Final Fix, Pneumatic tube (Faculty Office) | 36d | 2012-05-16 | 2012-06-27 | S08F109901C0 |  |  |  |  | 159d | 144d |  | MECHANICAL [1036.8 h]; Cost |  |  |  |  | S08F140303C0 | SW | C | 08 | F1 | ME | 403 | 03 | BILL 9 | B09 | S2 | FF | R00 | ACF07 | 403 |  |  | FF | MEP |  |  |  |  |  |  |  |  |  |  |
| S08F126015C0 |  | SW-08 ; Final Fix, Termination & Gladding of Cables (Faculty Office) | 36d | 2012-05-30 | 2012-07-11 | S08F126005C0 |  |  |  |  | 99d | 66d |  | ELECTRICAL [85.2 h]; Cost |  |  |  |  | S08F126015C0 | SW | C | 08 | F1 | ME | 260 | 15 | BILL 9 | B09 | S2 | FF | R00 | ACF07 | 260 |  |  | FF | MEP |  |  |  |  |  |  |  |  |  |  |
| S08F122025C0 |  | SW-08 ; Final Fix, Inst of Sanitary Ware (Faculty Office) | 36d | 2012-06-13 | 2012-07-25 | S08F109205C0, S08F109305C0, A10230 FS+148d |  |  |  |  | 99d | 0d |  | PLUMBING [1246.8 h]; Cost |  |  |  |  | S08F122025C0 | SW | C | 08 | F1 | ME | 220 | 25 | BILL 9 | B09 | S2 | FF | R00 | ACF07 | 220 |  |  | FF | MEP |  |  |  |  |  |  |  |  |  |  |
| S08F109601C0 |  | SW-08 ; Flooring (Rubber & etc) (Faculty Office) | 42d | 2012-06-28 | 2012-08-15 | S08F109901C0, S08F109501C0, S08F105501C0 FF |  |  |  |  | 15d | 0d |  | RUBBER FLOOR [56 h]; RUBBER FLOOR [130 m2]; Cost |  |  | 326 | 955 | S08F109601C0 | SW | C | 08 | F1 | FF | 096 | 01 | BILL 9 | B09 | S2 | 03 | R00 | ACF06 | RF |  |  |  |  |  |  |  |  |  |  |  |  |  |  |
| S08F109905C0 |  | SW-08 ; Ceiling Prime & 1st coat (Faculty Office) | 30d | 2012-06-28 | 2012-08-01 | S08F109501C0 |  |  |  |  | 109d | 0d |  | CEILING PAINT [60 h]; CEILING PAINT [74 m2]; Cost |  |  | 330 | 958 | S08F109905C0 | SW | C | 08 | F1 | PA | 099 | 05 | BILL 9 | B09 | S2 | 01 | R00 | ACF06 | 099 |  |  |  |  |  |  |  |  |  |  |  |  |  |  |
| S08F121115C0 |  | SW-08 ; 2nd Fix, Inst of Sprinkler droppers (Faculty Office) | 42d | 2012-06-28 | 2012-08-15 | S08F109501C0 |  |  |  |  | 33d | 0d |  | MECHANICAL [1309.2 h]; Cost |  |  |  |  | S08F121115C0 | SW | C | 08 | F1 | ME | 211 | 15 | BILL 9 | B09 | S2 | 2F | R00 | ACF07 | 211 |  |  | 2n | MEP |  |  |  |  |  |  |  |  |  |  |
| S08F123021C0 |  | SW-08 ; 2nd Fix, Inst of Flexible Duct & Plenum boxes (Faculty Office) | 42d | 2012-06-28 | 2012-08-15 | S08F109205C0, S08F109501C0 |  |  |  |  | 33d | 0d |  | MECHANICAL [166.8 h]; Cost |  |  |  |  | S08F123021C0 | SW | C | 08 | F1 | ME | 230 | 21 | BILL 9 | B09 | S2 | 2F | R00 | ACF07 | 230 |  |  | 2n | MEP |  |  |  |  |  |  |  |  |  |  |
| S08F126017C0 |  | SW-08 ; Final Fix, Inst of Ceiling rose (Faculty Office) | 36d | 2012-06-28 | 2012-08-08 | S08F109501C0 |  |  |  |  | 33d | 0d |  | ELECTRICAL [36 h]; Cost |  |  |  |  | S08F126017C0 | SW | C | 08 | F1 | ME | 260 | 17 | BILL 9 | B09 | S2 | FF | R00 | ACF07 | 260 |  |  | FF | MEP |  |  |  |  |  |  |  |  |  |  |
| S08F127002C0 |  | SW-08 ; 2nd Fix, Wiring Droppers (Faculty Office) | 42d | 2012-06-28 | 2012-08-15 | S08F109501C0 |  |  |  |  | 33d | 0d |  | ELECTRICAL [241.2 h]; Cost |  |  |  |  | S08F127002C0 | SW | C | 08 | F1 | ME | 270 | 02 | BILL 9 | B09 | S2 | 2F | R00 | ACF07 | 270 |  |  | 2n | MEP |  |  |  |  |  |  |  |  |  |  |
| S08F122021C0 |  | SW-08 ; Final Fix, Terminate Sanitary Ware & Appliances (Faculty Office) | 36d | 2012-07-26 | 2012-09-08 | S08F122011C0, S08F122025C0 |  |  |  |  | 99d | 84d |  | PLUMBING [1246.8 h]; Cost |  |  |  |  | S08F122021C0 | SW | C | 08 | F1 | ME | 220 | 21 | BILL 9 | B09 | S2 | FF | R00 | ACF07 | 220 |  |  | FF | MEP |  |  |  |  |  |  |  |  |  |  |
| S08F109903C0 |  | SW-08 ; Wall Final Paint (Faculty Office) | 30d | 2012-08-02 | 2012-09-08 | S08F109901C0, S08F109905C0 |  |  |  |  | 109d | 66d |  | WALL PAINT [520 h]; WALL PAINT [648 m2]; Cost |  |  | 329 | 957 | S08F109903C0 | SW | C | 08 | F1 | PA | 099 | 03 | BILL 9 | B09 | S2 | 02 | R00 | ACF06 | 099 |  |  |  |  |  |  |  |  |  |  |  |  |  |  |
| S08F126003C0 |  | SW-08 ; Final Fix, Inst of Light fittings (Faculty Office) | 42d | 2012-08-09 | 2012-09-29 | S08F109501C0, S08F126017C0 |  |  |  |  | 33d | 0d |  | ELECTRICAL [4813.2 h]; Cost |  |  |  |  | S08F126003C0 | SW | C | 08 | F1 | ME | 260 | 03 | BILL 9 | B09 | S2 | FF | R00 | ACF07 | 260 |  |  | FF | MEP |  |  |  |  |  |  |  |  |  |  |
| S08F106101C0 |  | SW-08 ; Wood / caseworks (Faculty Office) | 60d | 2012-08-16 | 2012-10-29 | S08CO04406C0, S08F109501C0, S08F109901C0, SAFWA00105M0, SAFCI22002R02 FS+190d, S08F109601C0, SZ9GZ06151R2 FF |  |  |  |  | 15d | 0d |  | WOOD WORK/CASEWORK [112.27 no]; WOOD WORK/CASEWORK [4186 h]; Cost |  |  | 332 | 960 | S08F106101C0 | SW | C | 08 | F1 | WO | 061 | 01 | BILL 9 | B09 | S2 | WW | R00 | ACF06 | 061 |  |  |  |  |  |  |  |  |  |  |  |  |  |  |
| S08F108107C0 |  | SW-08 ; Doors (Faculty Office) | 36d | 2012-08-16 | 2012-09-29 | S08F108103C0, S08F109901C0, S08F109601C0 |  |  |  |  | 61d | 0d |  | ASSORTED DOORS [620 h]; ASSORTED DOORS [62 no]; Cost |  |  | 317 | 948 | S08F108107C0 | SW | C | 08 | F1 | DO | 081 | 07 | BILL 9 | B09 | S2 | DR | R00 | ACF06 | 081 |  | 08 |  |  |  |  |  |  |  |  |  |  |  |  |
| S08F109701C0 |  | SW-08 ; Wall finishes (ST, WD, WC) (Faculty Office) | 54d | 2012-08-16 | 2012-10-20 | S08F126011C0, S08F127020C0, SAFCI22002R02 FS+170d, S08F109601C0 |  |  |  |  | 21d | 0d |  | ASSORTED WALL FINISH [1073 h]; ASSORTED WALL FINISH [1234 m2]; Cost |  |  | 105 | 1002 | S08F109701C0 | SW | C | 08 | F1 | WF | 097 | 01 | BILL 9 | B09 | S2 | 01 | R00 | ACF06 | 097 | R3 |  |  |  |  |  |  |  |  |  |  |  |  |  |
| S08F121113C0 |  | SW-08 ; Final Fix, Inst of Sprinklers head/ Extinguisher (Faculty Office) | 36d | 2012-08-16 | 2012-09-29 | S08F109501C0, S08F121115C0, SZ9GZ21156R2 FF |  |  |  |  | 33d | 0d |  | MECHANICAL [237.6 h]; Cost |  |  |  |  | S08F121113C0 | SW | C | 08 | F1 | ME | 211 | 13 | BILL 9 | B09 | S2 | FF | R00 | ACF07 | 211 |  |  | FF | MEP |  |  |  |  |  |  |  |  |  |  |
| S08F123019C0 |  | SW-08 ; Final Fix, Inst of Grilles & Diffusers (Faculty Office) | 36d | 2012-08-16 | 2012-09-29 | S08F109501C0, S08F123021C0 |  |  |  |  | 33d | 0d |  | MECHANICAL [835.2 h]; Cost |  |  |  |  | S08F123019C0 | SW | C | 08 | F1 | ME | 230 | 19 | BILL 9 | B09 | S2 | FF | R00 | ACF07 | 230 |  |  | FF | MEP |  |  |  |  |  |  |  |  |  |  |
| S08F127030C0 |  | SW-08 ; Final Fix, Inst of ELV devise (Detector/Speaker) (Faculty Office) | 36d | 2012-08-16 | 2012-09-29 | S08F109501C0, S08F127002C0 |  |  |  |  | 33d | 0d |  | ELECTRICAL [1348.8 h]; Cost |  |  |  |  | S08F127030C0 | SW | C | 08 | F1 | ME | 270 | 30 | BILL 9 | B09 | S2 | FF | R00 | ACF07 | 270 |  |  | FF | MEP |  |  |  |  |  |  |  |  |  |  |
| S08F101006C0 |  | SW-08 ; 2nd, Ceiling Inspection by Consultants (Faculty Office) | 6d | 2012-09-30 | 2012-10-06 | S08F121115C0, S08F123009C0, S08F123015C0, S08F127002C0, S08F109501C0, S08F121113C0, S08F123019C0, S08F126003C0, S08F126017C0, S08F127030C0, S08F126015C0 |  |  |  |  | 33d | 18d |  | Labor General [0.6 h]; Cost |  |  |  |  | S08F101006C0 | SW | C | 08 | F1 | ME | 010 | 06 | BILL 9 | B09 | S2 | CI | R00 | ACF07 | 010 |  |  | 2n | MEP |  |  |  |  |  |  |  |  |  |  |
| S08F108709C0 |  | SW-08 ; Ironmongery (Faculty Office) | 30d | 2012-09-30 | 2012-11-05 | S08F108107C0, SZ9GZ08152R2 FF, SV10AF08106R2 FF |  |  |  |  | 61d | 46d |  | IRONMONGERY [500 h]; IRONMONGERY [50 no]; Cost |  |  | 322 | 951 | S08F108709C0 | SW | C | 08 | F1 | DO | 087 | 09 | BILL 9 | B09 | S2 | IM | R00 | ACF06 | 087 |  | 08 |  |  |  |  |  |  |  |  |  |  |  |  |
| S08F111001C0 |  | SW-08 ; Wall Protection (WP, CG, WG, FCG) (Faculty Office) | 24d | 2012-10-21 | 2012-11-20 | S08F109701C0, S08F109903C0 SS |  |  |  |  | 49d | 34d |  | Labor General [2 h]; Cost |  |  | 326 | 1001 | S08F111001C0 | SW | C | 08 | F1 | WF | 110 | 01 | BILL 9 | B09 | S2 | 03 | R00 | ACF08 | b |  |  |  |  |  |  |  |  |  |  |  |  |  |  |
| S08F109503C0 |  | SW-08 ; Ceiling closure - ACT/Gypsum (Faculty Office) | 24d | 2012-10-30 | 2012-11-27 | S08F101006C0, S08F121115C0, S08F126005C0, S08F127001C0, S08F127002C0, SAFOA09511C1 FF, S08F106101C0, S08F109701C0, S08F123021C0, S08F126007C0 |  |  |  |  | 15d | 0d |  | ASSORTED CEILING FINISH [962.48 h]; CEILING GYPSUM [28.7 h]; ASSORTED CEILING FINISH [1565 m2]; CEILING GYPSUM [87 m2]; Cost |  |  | 324 | 953 | S08F109503C0 | SW | C | 08 | F1 | CE | 095 | 03 | BILL 9 | B09 | S2 | 02 | R00 | ACF06 | 095 | R3 |  |  |  |  |  |  |  |  |  |  |  |  |  |
| S08F122029C0 |  | SW-08 ; Final Fix, Medical Gas pipe (Faculty Office) | 18d | 2012-10-30 | 2012-11-20 | S08F109501C0, S08F106101C0 |  |  |  |  | 39d | 24d |  | PLUMBING [187.2 h]; Cost |  |  |  |  | S08F122029C0 | SW | C | 08 | F1 | ME | 220 | 29 | BILL 9 | B09 | S2 | FF | R00 | ACF07 | 220 |  |  | FF | MEP |  |  |  |  |  |  |  |  |  |  |
| S08F109672C1 |  | SW-08, Carpet Tile Finish (Faculty Office-1) | 0d | 2012-11-28 | 2012-11-28 | S08F109903C0 SS, S08F109907C0 SS |  |  |  |  | 33d | 18d |  | Cost |  |  |  |  |  | SW | C | 08 | F1 | FF | 096 |  |  | B09 |  |  | R00 | ACF06 | CPT |  |  |  | CPT |  |  |  |  |  |  |  |  |  |  |
| S08F109907C0 |  | SW-08 ; Ceiling Final paint (Faculty Office) | 18d | 2012-11-28 | 2012-12-19 | S08F109601C0, S08F109905C0, S08F109503C0 |  |  |  |  | 25d | 0d |  | CEILING PAINT [33 h]; CEILING PAINT [40 m2]; Cost |  |  | 331 | 959 | S08F109907C0 | SW | C | 08 | F1 | PA | 099 | 07 | BILL 9 | B09 | S2 | 02 | R00 | ACF06 | 099 |  |  |  |  |  |  |  |  |  |  |  |  |  |  |
| S08F111003C0 |  | SW-08 ; FF & E (Faculty Office) | 18d | 2012-11-28 | 2012-12-19 | S08F109601C0, S08F106101C0, S08F109503C0 |  |  |  |  | 25d | 10d |  | FF&E [208 h]; FF&E [110.75 no]; Cost |  |  | 333 | 961 | S08F111003C0 | SW | C | 08 | F1 | WO | 110 | 03 | BILL 9 | B09 | S2 | FF&E | R00 | ACF08 | a |  |  |  |  |  |  |  |  |  |  |  |  |  |  |

| ID | WBS | Activity | Duration | Start | Finish | Predecessors | Complete | Remaining | Planned start | Planned finish | Total float | Free float | Calendar | Resources | Cost | Actual cost | change id | CCAD BUILDING(SET) | CCAD PHASE(SET) | CCAD FLOOR(SET) | CCAD ZONE(SET) | CCAD WORK(SET) | CCAD SECTION(SET) | CCAD SERIAL No.(SET) | CCAD SUB ZONE MEP(SET) | CCAD CBS(SET) | CCAD BILL(SET) | CCAD HANDOVER(SET) | CCAD TAG(SET) | CCAD REV(SET) | CCADACF (SET) | CCAD CSA | CCAD SSCF | Claimed This Month | July2011 Target% Complete | U% | Act Selector % | user_number8 | user_integer1 | user_integer2 | user_number7 | Change Order # | NEW ACTIVITY ID | P_811 | P_711 | CCAD DIVISION(SET) | CCAD MEQ | R3 Finish |
| --- | --- | --- | --- | --- | --- | --- | --- | --- | --- | --- | --- | --- | --- | --- | --- | --- | --- | --- | --- | --- | --- | --- | --- | --- | --- | --- | --- | --- | --- | --- | --- | --- | --- | --- | --- | --- | --- | --- | --- | --- | --- | --- | --- | --- | --- | --- | --- | --- |
| S08F122027C0 |  | SW-08 ; Final Fix, Inst of All drain (Faculty Office) | 18d | 2012-11-28 | 2012-12-19 | S08F109305C0, S08F109503C0, SZ9GZ22057R2 FF |  |  |  |  | 15d | 0d |  | PLUMBING [310.8 h]; Cost |  |  | S08F122027C0 | SW | C | 08 | F1 | ME | 220 | 27 | FF | BILL 9 | B09 | S2 | FF | R00 | ACF07 | MEP | 220 |  |  |  |  |  |  |  |  |  |  |  |  |  |  |  |
| S08F126019C0 |  | SW-08 ; Final Fix, Inst of Switch/Sockets (Faculty Office) | 18d | 2012-11-28 | 2012-12-19 | S08F109901C0, S08F109503C0, SZ9GZ27058R2 FF, SV09GZ10255R2 FF |  |  |  |  | 15d | 0d |  | ELECTRICAL [256.8 h]; Cost |  |  | S08F126019C0 | SW | C | 08 | F1 | ME | 260 | 19 | FF | BILL 9 | B09 | S2 | FF | R00 | ACF07 | MEP | 260 |  |  |  |  |  |  |  |  |  |  |  |  |  |  |  |
|  | 10 | **Precommissioning Tesing & snagging (Faculty Office-1)** |  | 2012-12-20 | 2013-01-29 |  |  |  |  |  |  |  |  |  |  |  |  |  |  |  |  |  |  |  |  |  |  |  |  |  |  |  |  |  |  |  |  |  |  |  |  |  |  |  |  |  |  |  |
| S08TS01811C0 |  | SW-08 ; MEP de-snag, FIREM sign-off | 10d | 2012-12-20 | 2012-12-31 | S08F126015C0, S08F122025C0, S08F122027C0, S08F122021C0, S08F121113C0, S08F123019C0, S08F122029C0, S08F126017C0, S08F126003C0, S08F127030C0, S08F140303C0, S08F126019C0, S08F109672C1 |  |  |  |  | 15d | 0d |  | TESTING & COMMISSIONING [510 h]; Cost |  |  | S08TS01801C0 | SW | C | 08 | TS | SC | 018 | 01 |  | BILL 9 | B09 | S2 | 01 | R00 | ACF07 |  | 018 |  |  |  |  |  |  |  |  |  |  |  |  |  |  |  |
| S08TS01806C0 |  | SW-08 ; Touch-up & Clean / JV inspection /CIR /De-snag | 18d | 2013-01-02 | 2013-01-22 | S08F106101C0, S08F107103C0, S08F108709C0, S08F109305C0, S08F109601C0, S08F109701C0, S08F109903C0, S08F109907C0, S08F111001C0, S08F111003C0, S08TS01811C0, S08F105501C0, S08F109503C0 |  |  |  |  | 15d | 0d |  | TESTING & COMMISSIONING [128 h]; Cost |  |  | S08TS01802C0 | SW | C | 08 | TS | SC | 018 | 02 |  | BILL 9 | B09 | S2 | 02 | R00 | ACF07 |  | 018 |  |  |  |  |  |  |  |  |  |  |  |  |  |  |  |
| S08TS01809C0 |  | SW-08 ; Consultant's final de-snag inspection | 7d | 2013-01-23 | 2013-01-29 | S08TS01806C0, S08TS01810C0 |  |  |  |  | 19d | 0d | R00-C02, Calendar day | Labor General [1 h]; Cost |  |  | S08TS01803C0 | SW | C | 08 | TS | SC | 018 | 03 |  | BILL 9 | B09 | S2 | 03 | R00 | ACF07 |  | 018 |  |  |  |  |  |  |  |  |  |  |  |  |  |  |  |
|  | 04 | **Faculty Office-2** |  | 2011-06-08 | 2013-01-01 |  |  |  |  |  |  |  |  |  |  |  |  |  |  |  |  |  |  |  |  |  |  |  |  |  |  |  |  |  |  |  |  |  |  |  |  |  |  |  |  |  |  |  |
| S08F222011C0 |  | SW-08 ; 2nd Fix, Drainage/Water pipe (wall) (Faculty Office-2) | 42d | 2011-06-08 A | 2012-01-03 | S08F209201C0 | 5% | 39.9d | 2011-08-01 | 2011-09-21 | 36.85d | 2.1d |  | PLUMBING [310.8 h]; Cost [16770.4 AED] | 16,770.39 | 838.52 | S08F222011C0 | SW | C | 08 | F2 | ME | 220 | 11 | 2n | BILL 9 | B09 | S2 | 2F | R00 | ACF07 | MEP | 220 | 1944.62 |  |  |  |  |  |  |  |  |  |  |  |  |  |  |
| S08F223001C0 |  | SW-08 ; 1st Fix, Inst. of Supports for MEP (Faculty Office-2) | 42d | 2011-06-16 A | 2011-10-08 | S08S307807C0 | 85% | 6.3d | 2011-06-16 | 2011-08-06 | 32.15d | 0d |  | MECHANICAL [536.4 h]; Cost [30275.7 AED] | 30,275.67 | 25,734.32 | S08F223001C0 | SW | C | 08 | F2 | ME | 230 | 01 | 1S | BILL 9 | B09 | S2 | 1F | R00 | ACF04 | MEP | 230 | 10535.94 | 30 | 85 | M1F |  |  |  |  |  |  |  |  |  |  |  |
| S08F209201C0 |  | SW-08 ; Metal Studs (Faculty Office-2) | 45d | 2011-07-10 A | 2011-11-14 | S08F223001C0 SS, S08CO04406C0 FF, S08CO04405C0 FF | 20% | 36d | 2011-08-06 | 2011-09-29 | 34.75d | 0d |  | PARTITIONS [5225 h]; PARTITIONS - Metal Studs [583 m]; Cost |  |  | S08F209201C0 | SW | C | 08 | F2 | PT | 092 | 01 |  | BILL 9 | B09 | S2 | 1F | R00 | ACF06 | GP | 092 |  |  | 20 | PMS | 0 | 0 | 0 | 0 | 313 | 944 | 10 | 5 |  |  |  |
| S08F221111C0 |  | SW-08 ; 1st Fix, Inst of Sprinkler main pipe (Faculty Office-2) | 66d | 2011-07-10 A | 2011-12-07 | S08F222005C0 SS+14d, S08F223001C0 | 50% | 33d | 2011-10-03 | 2011-12-25 | 32.15d | 0d |  | MECHANICAL [793.2 h]; Cost [43268 AED] | 43,267.97 | 21,633.98 | S08F221111C0 | SW | C | 08 | F2 | ME | 211 | 11 | 1S | BILL 9 | B09 | S2 | 1F | R00 | ACF04 | MEP | 211 |  | 30 | 40 | M1F | 0 | 0 | 0 | 0 |  |  | 30 | 10 |  |  |  |
| S08F221117C0 |  | SW-08 ; 1st Fix, Inst of Sprinkler branch pipe (Faculty Office-2) | 60d | 2011-07-10 A | 2012-01-12 | S08F209201C0, S08F221111C0 | 50% | 30d | 2011-11-21 | 2012-02-02 | 110.45d | 78.3d |  | MECHANICAL [682.8 h]; Cost [37306.8 AED] | 37,306.8 | 18,653.4 | S08F221117C0 | SW | C | 08 | F2 | ME | 211 | 17 | 1S | BILL 9 | B09 | S2 | 1F | R00 | ACF04 | MEP | 211 |  |  | 40 | M1F | 0 | 0 | 0 | 0 |  |  |  |  |  |  |  |
| S08F222019C0 |  | SW-08 ; 1st Fix, Inst of Drainage pipe (ceiling) (Faculty Office-2) | 66d | 2011-07-10 A | 2011-10-31 | S08F223001C0, S08F226013C0 SS+12d | 70% | 19.8d | 2011-09-08 | 2011-11-29 | 32.15d | 0d |  | PLUMBING [310.8 h]; Cost [16770.4 AED] | 16,770.39 | 11,739.27 | S08F222019C0 | SW | C | 08 | F2 | ME | 220 | 19 | 1S | BILL 9 | B09 | S2 | 1F | R00 | ACF04 | MEP | 220 |  | 30 | 40 | M1F | 0 | 0 | 0 | 0 |  |  | 30 | 15 |  |  |  |
| S08F226001C0 |  | SW-08 ; 1st Fix, Inst of Trunking/Conduiting (Faculty Office-2) | 60d | 2011-07-10 A | 2011-10-15 | S08F223001C0, S08S307807C0 | 90% | 6d | 2011-07-26 | 2011-10-06 | 32.15d | 0d |  | ELECTRICAL [447.6 h]; Cost [24105.1 AED] | 24,105.11 | 21,694.6 | S08F226001C0 | SW | C | 08 | F2 | ME | 260 | 01 | 1S | BILL 9 | B09 | S2 | 1F | R00 | ACF04 | MEP | 260 |  |  |  | M1F | 0 | 0 | 0 | 0 |  |  |  |  |  |  |  |
| S08F226013C0 |  | SW-08 ; 1st Fix, Inst of Cable Tray (Faculty Office-2) | 60d | 2011-08-10 A | 2011-10-22 | S08F223001C0, S08F227010C0 SS+10d, S08S307807C0 | 80% | 12d | 2011-09-07 | 2011-11-20 | 32.15d | 0d |  | ELECTRICAL [231.6 h]; Cost [13047.4 AED] | 13,047.37 | 10,437.89 | S08F226013C0 | SW | C | 08 | F2 | ME | 260 | 13 | 1S | BILL 9 | B09 | S2 | 1F | R00 | ACF04 | MEP | 260 |  |  |  | M1F | 0 | 0 | 0 | 0 |  |  | 10 | 0 |  |  |  |
| S08F227010C0 |  | SW-08 ; 1st Fix, Inst of Trunking for ELV system (Faculty Office-2) | 60d | 2011-08-10 A | 2011-10-15 | S08F223001C0, S08F226001C0 SS+14d, S08S307807C0 | 90% | 6d | 2011-08-24 | 2011-11-05 | 32.15d | 0d |  | ELECTRICAL [991.2 h]; Cost [51056.8 AED] | 51,056.81 | 45,951.13 | S08F227010C0 | SW | C | 08 | F2 | ME | 270 | 10 | 1S | BILL 9 | B09 | S2 | 1F | R00 | ACF04 | MEP | 270 |  |  |  | M1F | 0 | 0 | 0 | 0 |  |  | 10 | 0 |  |  |  |
| S08F223017C0 |  | SW-08 ; 1st Fix, Inst of CHW pipe (Faculty Office-2) | 54d | 2011-09-05 A | 2011-12-28 | S08F221111C0 SS+12d, S08F223001C0 | 5% | 51.3d | 2011-11-03 | 2012-01-12 | 32.15d | 0d |  | MECHANICAL [1687.2 h]; Cost [92145.2 AED] | 92,145.18 | 4,607.26 | S08F223017C0 | SW | C | 08 | F2 | ME | 230 | 17 | 1S | BILL 9 | B09 | S2 | 1F | R00 | ACF04 | MEP | 230 |  |  |  | M1F |  |  |  |  |  |  |  |  |  |  |  |
| S08F223023C0 |  | SW-08 ; 1st Fix, Inst of Main Ducting (Faculty Office-2) | 60d | 2011-09-05 A | 2011-12-28 | S08F223001C0, S08F223017C0 SS+10d | 15% | 51d | 2011-11-19 | 2012-01-31 | 74.45d | 0d |  | MECHANICAL [6650.4 h]; Cost [363211 AED] | 363,210.66 | 54,481.6 | S08F223023C0 | SW | C | 08 | F2 | ME | 230 | 23 | 1S | BILL 9 | B09 | S2 | 1F | R00 | ACF04 | MEP | 230 |  |  | 15 | M1F |  |  |  |  |  |  |  |  |  |  |  |
| S08F222005C0 |  | SW-08 ; 1st Fix, Inst of Water supply pipe (ceiling) (Faculty Office-2) | 54d | 2011-10-08 | 2011-12-15 | S08F222019C0 SS+7d, S08F223001C0 |  |  |  |  | 32.15d | 0d |  | PLUMBING [1688.4 h]; Cost |  |  | S08F222005C0 | SW | C | 08 | F2 | ME | 220 | 05 | 1S | BILL 9 | B09 | S2 | 1F | R00 | ACF04 | MEP | 220 |  |  |  | M1F |  |  |  |  |  |  |  |  |  |  |  |
| S08F227001C0 |  | SW-08 ; 1st Fix, Wiring/ Cabling work (Faculty Office-2) | 48d | 2011-10-22 | 2011-12-22 | S08F226001C0, S08F226013C0, S08F227010C0 |  |  |  |  | 127.45d | 95.3d |  | ELECTRICAL [241.2 h]; Cost |  |  | S08F227001C0 | SW | C | 08 | F2 | ME | 270 | 01 | 1S | BILL 9 | B09 | S2 | 1F | R00 | ACF04 | MEP | 270 |  |  |  | M1F |  |  |  |  |  |  |  |  |  |  |  |
| S08F222007C0 |  | SW-08 ; 1st Fix, Inst of Medical Gas pipe (Faculty Office-2) | 48d | 2011-10-24 | 2011-12-25 | S08F221111C0 SS+14d, S08F223001C0 |  |  |  |  | 50.45d | 15.7d |  | PLUMBING [187.2 h]; Cost |  |  | S08F222007C0 | SW | C | 08 | F2 | ME | 220 | 07 | 1S | BILL 9 | B09 | S2 | 1F | R00 | ACF04 | MEP | 220 |  |  |  | M1F |  |  |  |  |  |  |  |  |  |  |  |
| S08F208103C0 |  | SW-08 ; Door Frames (Faculty Office-2) | 36d | 2011-11-15 | 2011-12-28 | S08F209201C0, GNHE08101C0 FS+69d |  |  |  |  | 91.75d | 57d |  | ASSORTED DOORS [208 h]; Cost |  |  | S08F208103C0 | SW | C | 08 | F2 | DO | 081 | 03 |  | BILL 9 | B09 | S2 | DF | R00 | ACF06 |  | 081 |  |  |  |  |  |  |  |  | 316 | 947 |  |  | 08 |  |  |
| S08F209203C0 |  | SW-08 ; Partitions 1st face (Faculty Office-2) | 36d | 2011-11-15 | 2011-12-28 | S08F209201C0 |  |  |  |  | 46.75d | 12d |  | PARTITIONS [583 m]; PARTITIONS [4094 h]; Cost |  |  | S08F209203C0 | SW | C | 08 | F2 | PT | 092 | 03 |  | BILL 9 | B09 | S2 | 2F | R00 | ACF06 | GP | 092 |  |  | 0 | P1F |  |  |  |  | 314 | 945 |  |  |  |  |  |
| S08F222015C0 |  | SW-08 ; 2nd Fix, Medical Gas pipe (Faculty Office-2) | 42d | 2011-11-15 | 2012-01-05 | S08F209201C0, S08F222007C0 SS |  |  |  |  | 34.75d | 0d |  | PLUMBING [187.2 h]; Cost |  |  | S08F222015C0 | SW | C | 08 | F2 | ME | 220 | 15 | 2n | BILL 9 | B09 | S2 | 2F | R00 | ACF07 | MEP | 220 |  |  |  |  |  |  |  |  |  |  |  |  |  |  |  |
| S08F226009C0 |  | SW-08 ; 2nd Fix, Inst of Wall conduites (Faculty Office-2) | 42d | 2011-11-15 | 2012-01-05 | S08F209201C0 |  |  |  |  | 34.75d | 0d |  | ELECTRICAL [447.6 h]; Cost |  |  | S08F226009C0 | SW | C | 08 | F2 | ME | 260 | 09 | 2n | BILL 9 | B09 | S2 | 2F | R00 | ACF07 | MEP | 260 |  |  |  |  |  |  |  |  |  |  |  |  |  |  |  |
| S08F240302C0 |  | SW-08 ; 2nd Fix, Pneumatic tube (Faculty Office-2) | 42d | 2011-11-15 | 2012-01-05 | S08F209201C0 |  |  |  |  | 34.75d | 0d |  | MECHANICAL [1036.8 h]; Cost |  |  | S08F240302C0 | SW | C | 08 | F2 | ME | 403 | 02 | 2n | BILL 9 | B09 | S2 | 2F | R00 | ACF07 | MEP | 403 |  |  |  |  |  |  |  |  |  |  |  |  |  |  |  |
| S08F223008C0 |  | SW-08 ; 1st Fix, Inst of VCD's/FD's (Faculty Office-2) | 48d | 2011-12-28 | 2012-02-25 | S08F223023C0 |  |  |  |  | 74.45d | 42.3d |  | MECHANICAL [1111.2 h]; Cost |  |  | S08F223008C0 | SW | C | 08 | F2 | ME | 230 | 08 | 1S | BILL 9 | B09 | S2 | 1F | R00 | ACF04 | MEP | 230 |  |  |  | M1F |  |  |  |  |  |  |  |  |  |  |  |
| S08F223009C0 |  | SW-08 ; 2nd Fix, Inst of VAV'S CHW connection (Faculty Office-2) | 42d | 2011-12-28 | 2012-02-18 | S08F223017C0 |  |  |  |  | 32.15d | 0d |  | MECHANICAL [1018.8 h]; Cost |  |  | S08F223009C0 | SW | C | 08 | F2 | ME | 230 | 09 | 2n | BILL 9 | B09 | S2 | 2F | R00 | ACF07 | MEP | 230 |  |  |  |  |  |  |  |  |  |  |  |  |  |  |  |
| S08F201005C0 |  | SW-08 ; 2nd, Wall Inspection by Consultant (Faculty Office-2) | 6d | 2012-01-07 | 2012-01-12 | S08F222011C0, S08F222015C0, S08F226009C0, S08F240302C0 |  |  |  |  | 34.75d | 0d |  | Labor General [0.6 h]; Cost |  |  | S08F201005C0 | SW | C | 08 | F2 | ME | 010 | 05 | 2n | BILL 9 | B09 | S2 | WI | R00 | ACF07 | MEP | 010 |  |  |  |  |  |  |  |  |  |  |  |  |  |  |  |
| S08F209205C0 |  | SW-08 ; Partitions Closing (Faculty Office-2) | 45d | 2012-01-14 | 2012-03-06 | S08F201005C0, S08F209203C0, S08F222005C0, S08F222019C0, SAFOA09212C1 FF, S08F208103C0 FF, SAFCI22001R20 FS+72d |  |  |  |  | 34.75d | 0d |  | PARTITIONS [583 m]; PARTITIONS [5244 h]; Cost |  |  | S08F209205C0 | SW | C | 08 | F2 | PT | 092 | 05 |  | BILL 9 | B09 | S2 | FF | R00 | ACF06 | GP | 092 |  |  |  | P2F |  |  |  |  | 315 | 946 |  |  |  |  |  |
| S08F223015C0 |  | SW-08 ; 2nd Fix, Insulation of CHW pipe & Duct (Faculty Office-2) | 48d | 2012-02-18 | 2012-04-14 | S08F223009C0, S08F223017C0, S08F223023C0 |  |  |  |  | 32.15d | 0d |  | MECHANICAL [3716.4 h]; Cost |  |  | S08F223015C0 | SW | C | 08 | F2 | ME | 230 | 15 | 2n | BILL 9 | B09 | S2 | 2F | R00 | ACF07 | MEP | 230 |  |  |  |  |  |  |  |  |  |  |  |  |  |  |  |
| S08F207103C0 |  | SW-08 ; Waterproofing (Faculty Office-2) | 12d | 2012-03-07 | 2012-03-20 | S08F208103C0, S08F209205C0 |  |  |  |  | 124.75d | 0d |  | THERMAL & MOISTURE [216 h]; THERMAL & MOISTURE [1445 m2]; Cost |  |  | S08F207103C0 | SW | C | 08 | F2 | FF | 071 | 03 |  | BILL 9 | B09 | S2 | 01 | R00 | ACF03 |  | 071 |  |  |  |  |  |  |  |  | 105 | 999 |  |  |  |  |  |
| S08F209901C0 |  | SW-08 ; Wall Prime & 1st coat (Faculty Office-2) | 30d | 2012-03-07 | 2012-04-10 | S08F209205C0 |  |  |  |  | 34.75d | 0d |  | WALL PAINT [784 h]; WALL PAINT [977 m2]; Cost |  |  | S08F209901C0 | SW | C | 08 | F2 | PA | 099 | 01 |  | BILL 9 | B09 | S2 | 01 | R00 | ACF06 |  | 099 |  |  |  |  |  |  |  |  | 328 | 956 |  |  |  |  |  |
| S08F226005C0 |  | SW-08 ; 2nd Fix, Wiring for Power/Lighting/Emergency (Faculty Office-2) | 42d | 2012-03-07 | 2012-04-24 | S08F209205C0 |  |  |  |  | 124.75d | 0d |  | ELECTRICAL [241.2 h]; Cost |  |  | S08F226005C0 | SW | C | 08 | F2 | ME | 260 | 05 | 2n | BILL 9 | B09 | S2 | 2F | R00 | ACF07 | MEP | 260 |  |  |  |  |  |  |  |  |  |  |  |  |  |  |  |
| S08F226007C0 |  | SW-08 ; 2nd Fix, Cable Pulling (Faculty Office-2) | 42d | 2012-03-07 | 2012-04-24 | S08F209201C0 SS+6d, S08F209205C0 |  |  |  |  | 166.75d | 134.6d |  | ELECTRICAL [1532.4 h]; Cost |  |  | S08F226007C0 | SW | C | 08 | F2 | ME | 260 | 07 | 2n | BILL 9 | B09 | S2 | 2F | R00 | ACF07 | MEP | 260 |  |  |  |  |  |  |  |  |  |  |  |  |  |  |  |
| S08F226011C0 |  | SW-08 ; 2nd Fix, Inst of Equipment (DB) (Faculty Office-2) | 48d | 2012-03-07 | 2012-05-01 | S08F209205C0 |  |  |  |  | 106.75d | 62.6d |  | ELECTRICAL [646.8 h]; Cost |  |  | S08F226011C0 | SW | C | 08 | F2 | ME | 260 | 11 | 2n | BILL 9 | B09 | S2 | 2F | R00 | ACF04 | MEP | 260 |  |  |  |  |  |  |  |  |  |  |  |  |  | E |  |
| S08F226053C0 |  | SW-08 ; 2nd Fix, Wiring / Cabling (Faculty Office-2) | 42d | 2012-03-07 | 2012-04-24 | S08F209203C0, S08F209205C0 |  |  |  |  | 58.75d | 26.6d |  | ELECTRICAL [241.2 h]; Cost |  |  | S08F226053C0 | SW | C | 08 | F2 | ME | 260 | 53 | 2n | BILL 9 | B09 | S2 | 2F | R00 | ACF07 | MEP | 260 |  |  |  |  |  |  |  |  | 389 | 977 |  |  |  |  |  |
| S08F227020C0 |  | SW-08 ; 2nd Fix, Inst of ELV Equipment (Panels) (Faculty Office-2) | 54d | 2012-03-07 | 2012-05-08 | S08F209205C0 |  |  |  |  | 100.75d | 56.6d |  | ELECTRICAL [1868.4 h]; Cost |  |  | S08F227020C0 | SW | C | 08 | F2 | ME | 270 | 20 | 2n | BILL 9 | B09 | S2 | 2F | R00 | ACF04 | MEP | 270 |  |  |  |  |  |  |  |  |  |  |  |  |  | E |  |
| S08F209305C0 |  | SW-08 ; CeramSW floor tile (Faculty Office-2) | 42d | 2012-03-21 | 2012-05-08 | S08F207103C0 |  |  |  |  | 124.75d | 0d |  | CERAMIC FLOOR TILES [280 h]; CERAMIC FLOOR TILES [153 m2]; Cost |  |  | S08F209305C0 | SW | C | 08 | F2 | FF | 093 | 05 |  | BILL 9 | B09 | S2 | 02 | R00 | ACF06 |  | CT |  |  |  |  |  |  |  |  | 106 | 1000 |  |  |  |  |  |
| S08F205501C0 |  | SW-08 ; Handrails & balustrade (Faculty Office-2) | 36d | 2012-04-11 | 2012-05-22 | S08F209901C0 |  |  |  |  | 76.75d | 44.6d |  | SECONDARY STEEL [202 h]; Cost |  |  | S08F205501C0 | SW | C | 08 | F2 | SW | 055 | 01 |  | BILL 9 | B09 | S2 | 01 | R00 | ACF03 |  | a |  |  |  |  |  |  |  |  |  |  |  |  |  |  |  |
| S08F240303C0 |  | SW-08 ; Final Fix, Pneumatic tube (Faculty Office-2) | 36d | 2012-04-11 | 2012-05-22 | S08F209901C0 |  |  |  |  | 184.75d | 152.6d |  | MECHANICAL [1036.8 h]; Cost |  |  | S08F240303C0 | SW | C | 08 | F2 | ME | 403 | 03 | FF | BILL 9 | B09 | S2 | FF | R00 | ACF07 | MEP | 403 |  |  |  |  |  |  |  |  |  |  |  |  |  |  |  |
| S08F209501C0 |  | SW-08 ; Ceiling Grid and Service Tile (Faculty Office-2) | 36d | 2012-04-14 | 2012-05-26 | S08F209205C0 SS+15d, S08F221117C0, S08F223008C0, S08F223009C0, S08F223015C0, S08F227001C0, SAFCI22002R02 FS+72d, S08F226053C0 FF, S08F209901C0 |  |  |  |  | 32.15d | 0d |  | CEILING GRID FOR GYPSUM [827.9 h]; CEILING GRID FOR GYPSUM [70.87 m2]; Cost |  |  | S08F209501C0 | SW | C | 08 | F2 | CE | 095 | 01 |  | BILL 9 | B09 | S2 | 01 | R00 | ACF06 |  | 095 |  |  |  |  |  |  |  |  | 323 | 952 |  |  |  |  | R3 |
| S08F226015C0 |  | SW-08 ; Final Fix, Termination & Gladding of Cables (Faculty Office-2) | 36d | 2012-04-25 | 2012-06-05 | S08F226005C0 |  |  |  |  | 124.75d | 68.6d |  | ELECTRICAL [85.2 h]; Cost |  |  | S08F226015C0 | SW | C | 08 | F2 | ME | 260 | 15 | FF | BILL 9 | B09 | S2 | FF | R00 | ACF07 | MEP | 260 |  |  |  |  |  |  |  |  |  |  |  |  |  |  |  |
| S08F222025C0 |  | SW-08 ; Final Fix, Inst of Sanitary Ware (Faculty Office-2) | 36d | 2012-05-09 | 2012-06-20 | S08F209205C0, S08F209305C0, A10230 FS+148d |  |  |  |  | 124.75d | 0d |  | PLUMBING [1246.8 h]; Cost |  |  | S08F222025C0 | SW | C | 08 | F2 | ME | 220 | 25 | FF | BILL 9 | B09 | S2 | FF | R00 | ACF07 | MEP | 220 |  |  |  |  |  |  |  |  |  |  |  |  |  |  |  |
| S08F209601C0 |  | SW-08 ; Flooring (Rubber & etc) (Faculty Office-2) | 42d | 2012-05-26 | 2012-07-15 | S08F209901C0, SAFCI22002R02 FS+72d, S08F209501C0, S08F205501C0 FF |  |  |  |  | 32.15d | 0d |  | RUBBER FLOOR [56 h]; RUBBER FLOOR [130 m2]; Cost |  |  | S08F209601C0 | SW | C | 08 | F2 | FF | 096 | 01 |  | BILL 9 | B09 | S2 | 03 | R00 | ACF06 |  | RF |  |  |  |  |  |  |  |  | 326 | 955 |  |  |  |  | R3 |
| S08F209905C0 |  | SW-08 ; Ceiling Prime & 1st coat (Faculty Office-2) | 30d | 2012-05-26 | 2012-07-01 | S08F209501C0 |  |  |  |  | 80.15d | 0d |  | CEILING PAINT [49 h]; CEILING PAINT [60 m2]; Cost |  |  | S08F209905C0 | SW | C | 08 | F2 | PA | 099 | 05 |  | BILL 9 | B09 | S2 | 01 | R00 | ACF06 |  | 099 |  |  |  |  |  |  |  |  | 330 | 958 |  |  |  |  |  |
| S08F221115C0 |  | SW-08 ; 2nd Fix, Inst of Sprinkler droppers (Faculty Office-2) | 42d | 2012-05-26 | 2012-07-15 | S08F209501C0 |  |  |  |  | 56.15d | 0d |  | MECHANICAL [1309.2 h]; Cost |  |  | S08F221115C0 | SW | C | 08 | F2 | ME | 211 | 15 | 2n | BILL 9 | B09 | S2 | 2F | R00 | ACF07 | MEP | 211 |  |  |  |  |  |  |  |  |  |  |  |  |  |  |  |
| S08F223021C0 |  | SW-08 ; 2nd Fix, Inst of Flexible Duct & Plenum boxes (Faculty Office-2) | 42d | 2012-05-26 | 2012-07-15 | S08F209205C0, S08F209501C0 |  |  |  |  | 56.15d | 0d |  | MECHANICAL [166.8 h]; Cost |  |  | S08F223021C0 | SW | C | 08 | F2 | ME | 230 | 21 | 2n | BILL 9 | B09 | S2 | 2F | R00 | ACF07 | MEP | 230 |  |  |  |  |  |  |  |  |  |  |  |  |  |  |  |
| S08F226017C0 |  | SW-08 ; Final Fix, Inst of Ceiling rose (Faculty Office-2) | 36d | 2012-05-26 | 2012-07-08 | S08F209501C0 |  |  |  |  | 56.15d | 0d |  | ELECTRICAL [36 h]; Cost |  |  | S08F226017C0 | SW | C | 08 | F2 | ME | 260 | 17 | FF | BILL 9 | B09 | S2 | FF | R00 | ACF07 | MEP | 260 |  |  |  |  |  |  |  |  |  |  |  |  |  |  |  |
| S08F227002C0 |  | SW-08 ; 2nd Fix, Wiring Droppers (Faculty Office-2) | 42d | 2012-05-26 | 2012-07-15 | S08F209501C0 |  |  |  |  | 56.15d | 0d |  | ELECTRICAL [241.2 h]; Cost |  |  | S08F227002C0 | SW | C | 08 | F2 | ME | 270 | 02 | 2n | BILL 9 | B09 | S2 | 2F | R00 | ACF07 | MEP | 270 |  |  |  |  |  |  |  |  |  |  |  |  |  |  |  |
| S08F222021C0 |  | SW-08 ; Final Fix, Terminate Sanitary Ware & Appliances (Faculty Office-2) | 36d | 2012-06-21 | 2012-08-01 | S08F222011C0, S08F222025C0 |  |  |  |  | 124.75d | 92.6d |  | PLUMBING [1246.8 h]; Cost |  |  | S08F222021C0 | SW | C | 08 | F2 | ME | 220 | 21 | FF | BILL 9 | B09 | S2 | FF | R00 | ACF07 | MEP | 220 |  |  |  |  |  |  |  |  |  |  |  |  |  |  |  |
| S08F209903C0 |  | SW-08 ; Wall Final Paint (Faculty Office-2) | 30d | 2012-07-01 | 2012-08-05 | S08F209901C0, S08F209905C0 |  |  |  |  | 80.15d | 48d |  | WALL PAINT [422 h]; WALL PAINT [526 m2]; Cost |  |  | S08F209903C0 | SW | C | 08 | F2 | PA | 099 | 03 |  | BILL 9 | B09 | S2 | 02 | R00 | ACF06 |  | 099 |  |  |  |  |  |  |  |  | 329 | 957 |  |  |  |  |  |
| S08F226003C0 |  | SW-08 ; Final Fix, Inst of Light fittings (Faculty Office-2) | 42d | 2012-07-08 | 2012-08-28 | S08F209501C0, S08F226017C0 |  |  |  |  | 56.15d | 0d |  | ELECTRICAL [4813.2 h]; Cost |  |  | S08F226003C0 | SW | C | 08 | F2 | ME | 260 | 03 | FF | BILL 9 | B09 | S2 | FF | R00 | ACF07 | MEP | 260 |  |  |  |  |  |  |  |  |  |  |  |  |  |  |  |
| S08F206101C0 |  | SW-08 ; Wood / caseworks (Faculty Office-2) | 66d | 2012-07-15 | 2012-10-02 | S08CO04406C0, S08F209501C0, S08F209901C0, SAFWA00105M0, SAFCI22002R02 FS+190d, S08F209601C0 |  |  |  |  | 32.15d | 0d |  | WOOD WORK/CASEWORK [125.93 no]; WOOD WORK/CASEWORK [4695 h]; Cost |  |  | S08F206101C0 | SW | C | 08 | F2 | WO | 061 | 01 |  | BILL 9 | B09 | S2 | WW | R00 | ACF06 |  | 061 |  |  |  |  |  |  |  |  | 332 | 960 |  |  |  |  |  |
| S08F208107C0 |  | SW-08 ; Doors (Faculty Office-2) | 36d | 2012-07-15 | 2012-08-28 | S08F208103C0, S08F209901C0, S08F209601C0 |  |  |  |  | 85.15d | 0d |  | ASSORTED DOORS [510 h]; ASSORTED DOORS [51 no]; Cost |  |  | S08F208107C0 | SW | C | 08 | F2 | DO | 081 | 07 |  | BILL 9 | B09 | S2 | DR | R00 | ACF06 |  | 081 |  |  |  |  |  |  |  |  | 317 | 948 |  |  | 08 |  |  |
| S08F209701C0 |  | SW-08 ; Wall finishes (ST, WD, WC) (Faculty Office-2) | 54d | 2012-07-15 | 2012-09-18 | S08F226011C0, S08F227020C0, SAFCI22002R02 FS+170d, S08F209601C0 |  |  |  |  | 44.15d | 0d |  | ASSORTED WALL FINISH [872 h]; ASSORTED WALL FINISH [1001 m2]; Cost |  |  | S08F209701C0 | SW | C | 08 | F2 | WF | 097 | 01 |  | BILL 9 | B09 | S2 | 01 | R00 | ACF06 |  | 097 |  |  |  |  |  |  |  |  | 105 | 1002 |  |  |  |  | R3 |
| S08F221113C0 |  | SW-08 ; Final Fix, Inst of Sprinklers head/ Extinguisher (Faculty Office-2) | 36d | 2012-07-15 | 2012-08-28 | S08F209501C0, S08F221115C0 |  |  |  |  | 56.15d | 0d |  | MECHANICAL [237.6 h]; Cost |  |  | S08F221113C0 | SW | C | 08 | F2 | ME | 211 | 13 | FF | BILL 9 | B09 | S2 | FF | R00 | ACF07 | MEP | 211 |  |  |  |  |  |  |  |  |  |  |  |  |  |  |  |
| S08F223019C0 |  | SW-08 ; Final Fix, Inst of Grilles & Diffusers (Faculty Office-2) | 36d | 2012-07-15 | 2012-08-28 | S08F209501C0, S08F223021C0 |  |  |  |  | 56.15d | 0d |  | MECHANICAL [835.2 h]; Cost |  |  | S08F223019C0 | SW | C | 08 | F2 | ME | 230 | 19 | FF | BILL 9 | B09 | S2 | FF | R00 | ACF07 | MEP | 230 |  |  |  |  |  |  |  |  |  |  |  |  |  |  |  |
| S08F227030C0 |  | SW-08 ; Final Fix, Inst of ELV devise (Detector/Speaker) (Faculty Office-2) | 36d | 2012-07-15 | 2012-08-28 | S08F209501C0, S08F227002C0 |  |  |  |  | 56.15d | 0d |  | ELECTRICAL [1348.8 h]; Cost |  |  | S08F227030C0 | SW | C | 08 | F2 | ME | 270 | 30 | FF | BILL 9 | B09 | S2 | FF | R00 | ACF07 | MEP | 270 |  |  |  |  |  |  |  |  |  |  |  |  |  |  |  |
| S08F201006C0 |  | SW-08 ; 2nd, Ceiling Inspection by Consultants (Faculty Office-2) | 6d | 2012-08-28 | 2012-09-04 | S08F221115C0, S08F223009C0, S08F223015C0, S08F227002C0, S08F209501C0, S08F221113C0, S08F223019C0, S08F226003C0, S08F226017C0, S08F227030C0, S08F226015C0 |  |  |  |  | 56.15d | 24d |  | Labor General [0.6 h]; Cost |  |  | S08F201006C0 | SW | C | 08 | F2 | ME | 010 | 06 | 2n | BILL 9 | B09 | S2 | CI | R00 | ACF07 | MEP | 010 |  |  |  |  |  |  |  |  |  |  |  |  |  |  |  |
| S08F208709C0 |  | SW-08 ; Ironmongery (Faculty Office-2) | 28d | 2012-08-28 | 2012-09-30 | S08F208107C0 |  |  |  |  | 85.15d | 53d |  | IRONMONGERY [410 h]; IRONMONGERY [41 no]; Cost |  |  | S08F208709C0 | SW | C | 08 | F2 | DO | 087 | 09 |  | BILL 9 | B09 | S2 | IM | R00 | ACF06 |  | 087 |  |  |  |  |  |  |  |  | 322 | 951 |  |  | 08 |  |  |
| S08F211001C0 |  | SW-08 ; Wall Protection (WP, CG, WG, FCG) (Faculty Office-2) | 24d | 2012-09-18 | 2012-10-16 | S08F209701C0, S08F209903C0 SS |  |  |  |  | 71.15d | 39d |  | Labor General [2 h]; Cost |  |  | S08F211001C0 | SW | C | 08 | F2 | WF | 110 | 01 |  | BILL 9 | B09 | S2 | 03 | R00 | ACF08 |  | b |  |  |  |  |  |  |  |  | 326 | 1001 |  |  |  |  |  |
| S08F209503C0 |  | SW-08 ; Ceiling closure - ACT/Gypsum (Faculty Office-2) | 24d | 2012-10-02 | 2012-11-01 | S08F201006C0, S08F221115C0, S08F226005C0, S08F227001C0, S08F227002C0, SAFOA09511C1 FF, S08F206101C0, S08F209701C0, S08F223021C0, S08F226007C0, S08F209903C0 |  |  |  |  | 32.15d | 0d |  | ASSORTED CEILING FINISH [781.05 h]; CEILING GYPSUM [23.16 h]; ASSORTED CEILING FINISH [1270 m2]; CEILING GYPSUM [71 m2]; Cost |  |  | S08F209503C0 | SW | C | 08 | F2 | CE | 095 | 03 |  | BILL 9 | B09 | S2 | 02 | R00 | ACF06 |  | 095 |  |  |  |  |  |  |  |  | 324 | 953 |  |  |  |  | R3 |
| S08F222029C0 |  | SW-08 ; Final Fix, Medical Gas pipe (Faculty Office-2) | 18d | 2012-10-02 | 2012-10-23 | S08F209501C0, S08F206101C0 |  |  |  |  | 56.15d | 24d |  | PLUMBING [187.2 h]; Cost |  |  | S08F222029C0 | SW | C | 08 | F2 | ME | 220 | 29 | FF | BILL 9 | B09 | S2 | FF | R00 | ACF07 | MEP | 220 |  |  |  |  |  |  |  |  |  |  |  |  |  |  |  |
| S08F109673C1 |  | SW-08, Carpet Tile Finish (Faculty Office-2) | 0d | 2012-11-01 | 2012-11-01 | S08F209903C0 SS, S08F209907C0 SS |  |  |  |  | 64.4d | 41.27d |  | Cost |  |  |  | SW | C | 08 | F1 | FF | 096 |  |  |  | B09 |  |  | R00 | ACF06 | CPT | CPT |  |  |  |  |  |  |  |  |  |  |  |  |  |  |  |
| S08F209907C0 |  | SW-08 ; Ceiling Final paint (Faculty Office-2) | 18d | 2012-11-01 | 2012-11-24 | S08F209601C0, S08F209905C0, S08F209503C0 |  |  |  |  | 41.15d | 0d |  | CEILING PAINT [26 h]; CEILING PAINT [32 m2]; Cost |  |  | S08F209907C0 | SW | C | 08 | F2 | PA | 099 | 07 |  | BILL 9 | B09 | S2 | 02 | R00 | ACF06 |  | 099 |  |  |  |  |  |  |  |  | 331 | 959 |  |  |  |  |  |
| S08F211003C0 |  | SW-08 ; FF & E (Faculty Office-2) | 18d | 2012-11-01 | 2012-11-24 | S08F209601C0, S08F206101C0, S08F209503C0 |  |  |  |  | 41.15d | 9d |  | FF&E [169 h]; FF&E [89.88 no]; Cost |  |  | S08F211003C0 | SW | C | 08 | F2 | WO | 110 | 03 |  | BILL 9 | B09 | S2 | FF&E | R00 | ACF08 |  | a |  |  |  |  |  |  |  |  | 333 | 961 |  |  |  |  |  |
| S08F222027C0 |  | SW-08 ; Final Fix, Inst of All drain (Faculty Office-2) | 18d | 2012-11-01 | 2012-11-24 | S08F209305C0, S08F209503C0 |  |  |  |  | 32.15d | 0d |  | PLUMBING [310.8 h]; Cost |  |  | S08F222027C0 | SW | C | 08 | F2 | ME | 220 | 27 | FF | BILL 9 | B09 | S2 | FF | R00 | ACF07 | MEP | 220 |  |  |  |  |  |  |  |  |  |  |  |  |  |  |  |
| S08F226019C0 |  | SW-08 ; Final Fix, Inst of Switch/Sockets (Faculty Office-2) | 18d | 2012-11-01 | 2012-11-24 | S08F209901C0, S08F209503C0 |  |  |  |  | 32.15d | 0d |  | ELECTRICAL [256.8 h]; Cost |  |  | S08F226019C0 | SW | C | 08 | F2 | ME | 260 | 19 | FF | BILL 9 | B09 | S2 | FF | R00 | ACF07 | MEP | 260 |  |  |  |  |  |  |  |  |  |  |  |  |  |  |  |

| ID | WBS | Activity | Duration | Start | Finish | Predecessors | Total float | Free float | Calendar | Resources | change id | CCAD BUILDING(SET) | CCAD PHASE(SET) | CCAD FLOOR(SET) | CCAD ZONE(SET) | CCAD WORK(SET) | CCAD SECTION(SET) | CCAD SERIAL No.(SET) | CCAD CBS(SET) | CCAD BILL(SET) | CCAD HANDOVER(SET) | CCAD TAG(SET) | CCAD REV(SET) | CCADACF (SET) | CCAD SSCF | Change Order # | NEW ACTIVITY ID | CCAD CSA | Act Selector % | CCAD DIVISION(SET) | CCAD SUB ZONE MEP(SET) | CCAD MEQ | IDDD |
| --- | --- | --- | --- | --- | --- | --- | --- | --- | --- | --- | --- | --- | --- | --- | --- | --- | --- | --- | --- | --- | --- | --- | --- | --- | --- | --- | --- | --- | --- | --- | --- | --- | --- |
|  | 10 | **Precommissioning Tesing & snagging (Faculty Office-2)** |  | 2012-11-24 | 2013-01-01 |  |  |  |  |  |  |  |  |  |  |  |  |  |  |  |  |  |  |  |  |  |  |  |  |  |  |  |  |
| S08TS01804C0 |  | SW-08 ; MEP de-snag, FIREM sign-off | 9d | 2012-11-24 | 2012-12-05 | S08F226015C0, S08F222025C0, S08F222027C0, S08F221113C0, S08F223019C0, S08F222029C0, S08F226017C0, S08F226003C0, S08F227030C0, S08F222021C0, S08F240303C0, S08F226019C0 | 32.15d | 0d |  | TESTING & COMMISSIONING [510 h]; Cost | S08TS01801C0 | SW | C | 08 | TS | SC | 018 | 01 | BILL 9 | B09 | S2 | 01 | R00 | ACF07 | 018 |  |  |  |  |  |  |  |  |
| S08TS01807C0 |  | SW-08 ; Touch-up & Clean / JV inspection /CIR /De-snag | 17.25d | 2012-12-05 | 2012-12-25 | S08F206101C0, S08F207103C0, S08F208709C0, S08F209305C0, S08F209601C0, S08F209701C0, S08F209903C0, S08F209907C0, S08F211001C0, S08F211003C0, S08TS01804C0, S08F205501C0, S08F209503C0 | 32.15d | 0d |  | TESTING & COMMISSIONING [128 h]; Cost | S08TS01802C0 | SW | C | 08 | TS | SC | 018 | 02 | BILL 9 | B09 | S2 | 02 | R00 | ACF07 | 018 |  |  |  |  |  |  |  |  |
| S08TS01810C0 |  | SW-08 ; Consultant's final de-snag inspection | 7d | 2012-12-25 | 2013-01-01 | S08TS01807C0 | 40.15d | 21.15d | R00-C02, Calendar day | Labor General [1 h]; Cost | S08TS01803C0 | SW | C | 08 | TS | SC | 018 | 03 | BILL 9 | B09 | S2 | 03 | R00 | ACF07 | 018 |  |  |  |  |  |  |  |  |
|  | 05 | **TR Room** |  | 2011-11-05 | 2012-09-25 |  |  |  |  |  |  |  |  |  |  |  |  |  |  |  |  |  |  |  |  |  |  |  |  |  |  |  |  |
| S08TR09201C0 |  | SW-08 ; Metal Studs (TR RM) | 30d | 2011-11-05 | 2011-12-14 | S08PA09201C0 SS | 20.5d | 0d |  | PARTITIONS [318 h]; PARTITIONS - Metal Studs [35 m]; Cost | S08TR09201C0 | SW | C | 08 | TR | PT | 092 | 01 | BILL 9 | B09 | S2 | 1F | R00 | ACF06 | 092 | 313 | 885 | GP | PMS |  |  |  |  |
| S08TR08101C0 |  | SW-08 ; Door Frames (TR RM) | 18d | 2011-12-15 | 2012-01-05 | S08TR09201C0, GNHE08101C0 FS+69d | 74.5d | 66d |  | ASSORTED DOORS [13 h]; Cost | S08TR08101C0 | SW | C | 08 | TR | DO | 081 | 01 | BILL 9 | B09 | S2 | DF | R00 | ACF06 | 081 | 316 | 20001090 |  |  | 08 |  |  |  |
| S08TR09203C0 |  | SW-08 ; Partitions 1st face (TR RM) | 30d | 2011-12-15 | 2012-01-19 | S08TR09201C0 | 32.5d | 24d |  | PARTITIONS [35 m]; PARTITIONS [242 h]; Cost | S08TR09203C0 | SW | C | 08 | TR | PT | 092 | 03 | BILL 9 | B09 | S2 | 2F | R00 | ACF06 | 092 | 314 | 886 | GP | P1F |  |  |  |  |
| S08TR26026C0 |  | SW-08 ; 2nd Fix, Conduit (TR RM) | 30d | 2011-12-15 | 2012-01-19 | S08TR09201C0 | 20.5d | 0d |  | ELECTRICAL [447.6 h]; Cost | S08TR26026C0 | SW | C | 08 | TR | ME | 260 | 26 | BILL 9 | B09 | S2 | 2F | R00 | ACF07 | 260 |  |  | MEP |  |  | 2n |  |  |
| S08TR01005C0 |  | SW-08 ; 2nd, Wall Inspection by Consultant (TR RM) | 12d | 2012-01-21 | 2012-02-02 | S08TR26026C0 | 20.5d | 12d |  | Labor General [0.6 h]; Cost | S08TR01005C0 | SW | C | 08 | TR | ME | 010 | 05 | BILL 9 | B09 | S2 | WI | R00 | ACF07 | 010 |  |  | MEP |  |  | 2n |  |  |
| S08TR09205C0 |  | SW-08 ; Partitions Closing (TR RM) | 30d | 2012-02-19 | 2012-03-24 | S08TR01005C0, S08TR09201C0, S08TR09203C0, SAFOA09212C1 FF, S08TR08101C0 FF, S08PA09205C0 SS | 8.5d | 0d |  | PARTITIONS [35 m]; PARTITIONS [307 h]; Cost | S08TR09205C0 | SW | C | 08 | TR | PT | 092 | 05 | BILL 9 | B09 | S2 | FF | R00 | ACF06 | 092 | 315 | 887 | GP | P2F |  |  |  |  |
| S08TR09901C0 |  | SW-08 ; Wall Prime & 1st coat (TR RM) | 18d | 2012-03-25 | 2012-04-14 | S08TR09205C0 | 8.5d | 0d |  | WALL PAINT [50 h]; WALL PAINT [62 m2]; Cost | S08TR09901C0 | SW | C | 08 | TR | PA | 099 | 01 | BILL 9 | B09 | S2 | 01 | R00 | ACF06 | 099 | 360 | 20001110 |  |  |  |  |  |  |
| S08TR23009C0 |  | SW-08 ; 2nd Fix, Inst of VAV'S CHW connection (TR RM) | 30d | 2012-03-25 | 2012-04-28 | S08TR09205C0 | 23.5d | 0d |  | MECHANICAL [1018.8 h]; Cost | S08TR23009C0 | SW | C | 08 | TR | ME | 230 | 09 | BILL 9 | B09 | S2 | 2F | R00 | ACF07 | 230 |  |  | MEP |  |  | 2n |  |  |
| S08TR23011C0 |  | SW-08 ; 2nd Fix, Inst of VCD's/FD's (TR RM) | 30d | 2012-03-25 | 2012-04-28 | S08TR09205C0 | 23.5d | 0d |  | MECHANICAL [1111.2 h]; Cost | S08TR23011C0 | SW | C | 08 | TR | ME | 230 | 11 | BILL 9 | B09 | S2 | 2F | R00 | ACF07 | 230 |  |  | MEP |  |  | 2n |  |  |
| S08TR26005C0 |  | SW-08 ; 2nd Fix, Wiring for Power/Lighting/Emergency (TR RM) | 30d | 2012-03-25 | 2012-04-28 | S08TR09205C0, S08TR26026C0 | 50.5d | 42d |  | ELECTRICAL [241.2 h]; Cost | S08TR26005C0 | SW | C | 08 | TR | ME | 260 | 05 | BILL 9 | B09 | S2 | 2F | R00 | ACF07 | 260 |  |  | MEP |  |  | 2n |  |  |
| S08TR26007C0 |  | SW-08 ; 2nd Fix, Cable Pulling (TR RM) | 30d | 2012-03-25 | 2012-04-28 | S08TR09203C0, S08TR09205C0 | 35.5d | 12d |  | ELECTRICAL [1532.4 h]; Cost | S08TR26007C0 | SW | C | 08 | TR | ME | 260 | 07 | BILL 9 | B09 | S2 | 2F | R00 | ACF07 | 260 |  |  | MEP |  |  | 2n |  |  |
| S08TR26009C0 |  | SW-08 ; 2nd Fix, Inst of Equipment (DB, TR, SG,BUS) (TR RM) | 54d | 2012-03-25 | 2012-05-26 | S08TR09205C0 | 48.5d | 34d |  | ELECTRICAL [3362.4 h]; Cost | S08TR26009C0 | SW | C | 08 | TR | ME | 260 | 09 | BILL 9 | B09 | S2 | 2F | R00 | ACF04 | 260 |  |  | MEP |  |  | 2n | E |  |
| S08TR26027C0 |  | SW-08 ; 2nd Fix, Wiring / Cabling (TR RM) | 30d | 2012-03-25 | 2012-04-28 | S08TR09203C0, S08TR09205C0 | 50.5d | 42d |  | ELECTRICAL [241.2 h]; Cost | S08TR26027C0 | SW | C | 08 | TR | ME | 260 | 27 | BILL 9 | B09 | S2 | 2F | R00 | ACF07 | 260 | 417 | 1318 | MEP |  |  | 2n |  |  |
| S08TR23013C0 |  | SW-08 ; 2nd Fix, Insulation of CHW pipe & Duct (TR RM) | 36d | 2012-04-01 | 2012-05-12 | S08TR23009C0 SS+6d, S08TR23011C0 SS+6d | 23.5d | 0d |  | MECHANICAL [3716.4 h]; Cost | S08TR23013C0 | SW | C | 08 | TR | ME | 230 | 13 | BILL 9 | B09 | S2 | 2F | R00 | ACF07 | 230 |  |  | MEP |  |  | 2n |  |  |
| S08TR09501C0 |  | SW-08 ; Ceiling Grid and Service Tile (TR RM) | 24d | 2012-04-15 | 2012-05-12 | S08TR09205C0 SS+15d, S08TR09901C0 | 8.5d | 0d |  | CEILING GRID FOR GYPSUM [53.57 h]; CEILING GRID FOR GYPSUM [4.49 m2]; Cost | S08TR09501C0 | SW | C | 08 | TR | CE | 095 | 01 | BILL 9 | B09 | S2 | 01 | R00 | ACF06 | 095 | 336 | 1327 |  |  |  |  |  | 1 |
| S08TR09903C0 |  | SW-08 ; Wall - Final Paint (TR RM) | 12d | 2012-04-15 | 2012-04-28 | S08TR09901C0 | 72.5d | 58d |  | WALL PAINT [28 h]; WALL PAINT [33 m2]; Cost | S08TR09903C0 | SW | C | 08 | TR | PA | 099 | 03 | BILL 9 | B09 | S2 | 02 | R00 | ACF06 | 099 | 361 | 1312 |  |  |  |  |  |  |
| S08TR01006C0 |  | SW-08 ; 2nd, Ceiling Inspection by Consultants (TR RM) | 15d | 2012-05-13 | 2012-05-29 | S08TR23009C0, S08TR23011C0, S08TR23013C0, S08TR26007C0, S08TR09501C0 | 23.5d | 15d |  | Labor General [0.6 h]; Cost | S08TR01006C0 | SW | C | 08 | TR | ME | 010 | 06 | BILL 9 | B09 | S2 | CI | R00 | ACF07 | 010 |  |  | MEP |  |  | 2n |  |  |
| S08TR09601C0 |  | SW-08 ; Floor Finishes (TR RM) | 18d | 2012-05-13 | 2012-06-02 | S08TR09501C0 | 14.5d | 0d |  | ASSORTED FLOOR FINISH [992 h]; ASSORTED FLOOR FINISH [548 m2]; Cost | S08TR09601C0 | SW | C | 08 | TR | FF | 096 | 01 | BILL 9 | B09 | S2 | 01 | R00 | ACF06 | FF | 359 | 20001120 |  |  |  |  |  |  |
| S08TR23023C0 |  | SW-08 ; 2nd Fix, Flexible ducts (TR RM) | 30d | 2012-05-13 | 2012-06-17 | S08TR09205C0, S08TR09501C0 | 8.5d | 0d |  | MECHANICAL [166.8 h]; Cost | S08TR23023C0 | SW | C | 08 | TR | ME | 230 | 23 | BILL 9 | B09 | S2 | 2F | R00 | ACF07 | 230 | 412 | 20001140 | MEP |  |  | 2n |  |  |
| S08TR27002C0 |  | SW-08 ; 2nd Fix, Dressing of ELV panels (TR RM) | 30d | 2012-05-13 | 2012-06-17 | S08TR09205C0, S08TR27020C0 SS | 24.5d | 16d |  | ELECTRICAL [206.4 h]; Cost | S08TR27002C0 | SW | C | 08 | TR | ME | 270 | 02 | BILL 9 | B09 | S2 | 2F | R00 | ACF07 | 270 |  |  | MEP |  |  | 2n |  |  |
| S08TR27020C0 |  | SW-08 ; 2nd Fix, Inst of ELV Equipment (Panels) (TR RM) | 48d | 2012-05-13 | 2012-07-08 | S08TR09205C0, S08TR09501C0 | 24.5d | 0d |  | ELECTRICAL [1868.4 h]; Cost | S08TR27020C0 | SW | C | 08 | TR | ME | 270 | 20 | BILL 9 | B09 | S2 | 2F | R00 | ACF04 | 270 |  |  | MEP |  |  | 2n | E |  |
| S08TR21115C0 |  | SW-08 ; 2nd Fix, Gaseous Fire Suppression (TR RM) | 18d | 2012-05-20 | 2012-06-09 | S08TR09601C0 SS+6d | 14.5d | 6d |  | MECHANICAL [3496.8 h]; Cost | S08TR21115C0 | SW | C | 08 | TR | ME | 211 | 15 | BILL 9 | B09 | S2 | 2F | R00 | ACF07 | 211 | 411 | 20001130 | MEP |  |  | 2n |  |  |
| S08TR08105C0 |  | SW-08 ; Doors (TR RM) | 18d | 2012-06-03 | 2012-06-24 | S08TR08101C0, S08TR09901C0, S08TR09601C0 | 36.75d | 0d |  | ASSORTED DOORS [30 h]; ASSORTED DOORS [3 no]; Cost | S08TR08105C0 | SW | C | 08 | TR | DO | 081 | 05 | BILL 9 | B09 | S2 | DR | R00 | ACF06 | 081 | 317 | 1325 |  |  | 08 |  |  |  |
| S08TR09503C0 |  | SW-08 ; Ceiling closure (TR RM) | 16d | 2012-06-18 | 2012-07-05 | S08TR01006C0, S08TR21115C0, S08TR26005C0, S08TR26007C0, S08TR26026C0, S08TR26027C0, S08TR23023C0 | 8.5d | 0d |  | ASSORTED CEILING FINISH [49.2 h]; CEILING GYPSUM [1.44 h]; ASSORTED CEILING FINISH [80 m2]; CEILING GYPSUM [4 m2]; Cost | S08TR09503C0 | SW | C | 08 | TR | CE | 095 | 03 | BILL 9 | B09 | S2 | 02 | R00 | ACF06 | 095 | 337 | 20001080 |  |  |  |  |  |  |
| S08TR08709C0 |  | SW-08 ; Ironmongery (TR RM) | 14d | 2012-06-25 | 2012-07-10 | S08TR08105C0 | 36.75d | 28.25d |  | IRONMONGERY [30 h]; IRONMONGERY [3 no]; Cost | S08TR08709C0 | SW | C | 08 | TR | DO | 087 | 09 | BILL 9 | B09 | S2 | IM | R00 | ACF06 | 087 | 322 | 20001100 |  |  | 08 |  |  |  |
| S08TR09905C0 |  | SW-08 ; Ceiling Prime & 1st coat (TR RM) | 18d | 2012-07-07 | 2012-07-26 | S08TR09503C0 | 10.75d | 0d |  | CEILING PAINT [4 h]; CEILING PAINT [4 m2]; Cost | S08TR09905C0 | SW | C | 08 | TR | PA | 099 | 05 | BILL 9 | B09 | S2 | 01 | R00 | ACF06 | 099 | 362 | 1313 |  |  |  |  |  |  |
| S08TR23003C0 |  | SW-08 ; Final Fix, Inst of Grilles & Diffusers (TR RM) | 18d | 2012-07-07 | 2012-07-26 | S08TR09503C0 | 8.5d | 0d |  | MECHANICAL [835.2 h]; Cost | S08TR23003C0 | SW | C | 08 | TR | ME | 230 | 03 | BILL 9 | B09 | S2 | FF | R00 | ACF07 | 230 |  |  | MEP |  |  | FF |  |  |
| S08TR23074C0 |  | SW-08 ; Final Fix, Grilles, panels & diffusers (TR RM) | 18d | 2012-07-07 | 2012-07-26 | S08TR09503C0 | 8.5d | 0d |  | MECHANICAL [835.2 h]; Cost | S08TR23074C0 | SW | C | 08 | TR | ME | 230 | 74 | BILL 9 | B09 | S2 | FF | R00 | ACF07 | 230 | 419 | 20001160 | MEP |  |  | FF |  |  |
| S08TR26013C0 |  | SW-08 ; Final Fix, Termination & Gladding of Cables (TR RM) | 12d | 2012-07-07 | 2012-07-19 | S08TR09503C0, S08TR26009C0 | 14.5d | 6d |  | ELECTRICAL [85.2 h]; Cost | S08TR26013C0 | SW | C | 08 | TR | ME | 260 | 13 | BILL 9 | B09 | S2 | FF | R00 | ACF07 | 260 |  |  | MEP |  |  | FF |  |  |
| S08TR26015C0 |  | SW-08 ; Final Fix, Inst of Ceiling rose (TR RM) | 18d | 2012-07-07 | 2012-07-26 | S08TR09503C0 | 8.5d | 0d |  | ELECTRICAL [36 h]; Cost | S08TR26015C0 | SW | C | 08 | TR | ME | 260 | 15 | BILL 9 | B09 | S2 | FF | R00 | ACF07 | 260 |  |  | MEP |  |  | FF |  |  |
| S08TR26017C0 |  | SW-08 ; Final Fix, Inst of Switch/Sockets (TR RM) | 12d | 2012-07-07 | 2012-07-19 | S08TR09901C0, S08TR09903C0, S08TR09503C0 | 14.5d | 6d |  | ELECTRICAL [256.8 h]; Cost | S08TR26017C0 | SW | C | 08 | TR | ME | 260 | 17 | BILL 9 | B09 | S2 | FF | R00 | ACF07 | 260 |  |  | MEP |  |  | FF |  |  |
| S08TR26019C0 |  | SW-08 ; Final Fix, Inst of Light fittings (TR RM) | 18d | 2012-07-07 | 2012-07-26 | S08TR09503C0 | 8.5d | 0d |  | ELECTRICAL [4813.2 h]; Cost | S08TR26019C0 | SW | C | 08 | TR | ME | 260 | 19 | BILL 9 | B09 | S2 | FF | R00 | ACF07 | 260 |  |  | MEP |  |  | FF |  |  |
| S08TR26076C0 |  | SW-08 ; Final Fix, Lighting fittings (TR RM) | 18d | 2012-07-07 | 2012-07-26 | S08TR09503C0 | 8.5d | 0d |  | ELECTRICAL [4813.2 h]; Cost | S08TR26076C0 | SW | C | 08 | TR | ME | 260 | 76 | BILL 9 | B09 | S2 | FF | R00 | ACF07 | 260 | 420 | 20001170 | MEP |  |  | FF |  |  |
| S08TR27030C0 |  | SW-08 ; Final Fix, Inst of ELV devise (Detector/Speaker) (TR RM) | 18d | 2012-07-07 | 2012-07-26 | S08TR09503C0, S08TR27002C0 | 8.5d | 0d |  | ELECTRICAL [1348.8 h]; Cost | S08TR27030C0 | SW | C | 08 | TR | ME | 270 | 30 | BILL 9 | B09 | S2 | FF | R00 | ACF07 | 270 |  |  | MEP |  |  | FF |  |  |
| S08TR01802C0 |  | SW-08 ; MEP de-snag, FIREM sign-off | 14.25d | 2012-07-28 | 2012-08-13 | S08TR26017C0, S08TR23074C0, S08TR23003C0, S08TR26019C0, S08TR27030C0, S08TR26076C0, S08TR26013C0, S08TR26015C0 | 8.5d | 0d |  | TESTING & COMMISSIONING [510 h]; Cost | S05CO01851C0 | SW | C | 08 | TR | SC | 018 | 53 | BILL 9 | B09 | S2 | 01 | R00 | ACF07 | 018 |  |  |  |  |  |  |  |  |
| S08TR09907C0 |  | SW-08 ; Ceiling - Final paint (TR RM) | 12d | 2012-07-28 | 2012-08-09 | S08TR09905C0 | 10.75d | 2.25d |  | CEILING PAINT [2 h]; CEILING PAINT [2 m2]; Cost | S08TR09907C0 | SW | C | 08 | TR | PA | 099 | 07 | BILL 9 | B09 | S2 | 02 | R00 | ACF06 | 099 | 363 | 1314 |  |  |  |  |  |  |
| S08TR01801C0 |  | SW-08 ; Touch-up & Clean / JV inspection /CIR /De-snag | 23.25d | 2012-08-13 | 2012-09-11 | S08TR01802C0, S08TR08709C0, S08TR09601C0, S08TR09903C0, S08TR09907C0 | 8.5d | 0d |  | TESTING & COMMISSIONING [128 h]; Cost | S08TR01851C0 | SW | C | 08 | TR | SC | 018 | 51 | BILL 9 | B09 | S2 | 02 | R00 | ACF07 | 018 | 396 |  |  |  |  |  |  |  |
| S08TR01803C0 |  | SW-08 ; Consultant's final de-snag inspection | 12d | 2012-09-11 | 2012-09-25 | S08TR01801C0 | 8.5d | 0d |  | Labor General [1 h]; Cost | CP3TS01803C0 | SW | C | 08 | TR | SC | 018 | 03 | BILL 9 | B09 | S1 | 03 | R00 | ACF07 | 018 |  |  |  |  |  |  |  |  |

| ID | WBS | Activity | Duration | Start | Finish | Predecessors | Complete | Planned start | Planned finish | Total float | Free float | Constraint | Resources | change id | RENZ % COMPLETE | CCAD BUILDING(SET) | CCAD PHASE(SET) | CCAD FLOOR(SET) | CCAD ZONE(SET) | CCAD WORK(SET) | CCAD SECTION(SET) | CCAD SERIAL No.(SET) | CCAD CBS(SET) | CCAD BILL(SET) | CCAD HANDOVER(SET) | CCAD TAG(SET) | CCAD REV(SET) | CCADACF (SET) | CCAD SSCF | Phase | Area/ Department | Grids | Are | Weight & Nos | Process | Levels | CCAD CSA | Claimed This Month | ACCESS DATES | P_811 | P_711 |
| --- | --- | --- | --- | --- | --- | --- | --- | --- | --- | --- | --- | --- | --- | --- | --- | --- | --- | --- | --- | --- | --- | --- | --- | --- | --- | --- | --- | --- | --- | --- | --- | --- | --- | --- | --- | --- | --- | --- | --- | --- | --- |
|  | R8 | **Level 8 Low Roof** |  | 2010-12-08 | 2012-12-30 |  |  |  |  |  |  |  |  |  |  |  |  |  |  |  |  |  |  |  |  |  |  |  |  |  |  |  |  |  |  |  |  |  |  |  |  |
|  | 01 | **Structure & Envelopment** |  | 2010-12-08 | 2012-11-29 |  |  |  |  |  |  |  |  |  |  |  |  |  |  |  |  |  |  |  |  |  |  |  |  |  |  |  |  |  |  |  |  |  |  |  |  |
| SR8SA03307C0 |  | SW-R8 ; Corewall Concrete (Zone SA) | 3d | 2010-12-08 A | 2010-12-27 A | S08SA03307C0 | 100% | 2011-01-17 | 2011-01-19 |  |  |  | CONCRETE [6048 h]; CONCRETE [152 m3]; Cost | SR8SA03307C0 | 100 | SW | C | R8 | SA | CT | 033 | 07 | BILL 9 | B09 | S2 | 04 | R00 | ACF03 | 033 |  |  |  |  |  |  |  |  |  |  |  |  |
| SR8SC03305C0 |  | SW-R8 ; Corewall Concrete (Zone SC) | 4.88d | 2010-12-08 A | 2010-12-27 A | S08SC03305C0 | 100% | 2011-01-30 | 2011-02-03 |  |  |  | CONCRETE [6048 h]; CONCRETE [152 m3]; Cost | SR8SC03305C0 | 100 | SW | C | R8 | SC | CT | 033 | 05 | BILL 9 | B09 | S2 | 04 | R00 | ACF03 | 033 |  |  |  |  |  |  |  |  |  |  |  |  |
| SR8S105101C0 |  | SW-R8 ; Erection of Structural Steel of Roof Floor (Zone S1) | 4.62d | 2011-02-04 A | 2011-02-28 A | S08S105103C0, SR8SA03307C0 | 100% | 2011-02-08 | 2011-02-13 |  |  |  | STRUCTURAL STEEL [1259 h]; STRUCTURAL STEEL [42 T(Fe)]; Cost | SR8S105101C0 | 100 | SW | C | R8 | S1 | ST | 051 | 01 | BILL 9 | B09 | S2 | 01 | R00 | ACF03 | 051 | Z2 | SW | 5TH | C | A8B | EREC | 6FLR | ST |  |  |  |  |
| SR8S105103C0 |  | SW-R8 ; Alignment & welding of Roof Floor (Zone S1) | 6d | 2011-02-08 A | 2011-04-13 A | SR8S105101C0 | 100% | 2011-02-14 | 2011-02-21 |  |  |  | STRUCTURAL STEEL [423 h]; Cost | SR8S105103C0 | 100 | SW | C | R8 | S1 | ST | 051 | 03 | BILL 9 | B09 | S2 | 02 | R00 | ACF03 | 051 | Z2 | SW | 5TH | C | A8B | EREC | 6FLR | ST |  |  |  |  |
| SR8S305101C0 |  | SW-R8 ; Erection of Structural Steel of Roof Floor (Zone S3) | 7.43d | 2011-04-10 A | 2011-07-31 A | S08S305103C0 | 100% | 2011-04-03 | 2011-04-11 |  |  |  | STRUCTURAL STEEL [564 h]; STRUCTURAL STEEL [19 T(Fe)]; Cost | SR8S305101C0 | 95 | SW | C | R8 | S3 | ST | 051 | 01 | BILL 9 | B09 | S2 | 01 | R00 | ACF03 | 051 | Z2 | SW | 5TH | C | A8B | EREC | 6FLR | ST |  |  |  |  |
| SR8S305103C0 |  | SW-R8 ; Alignment & welding of Roof Floor (Zone S3) | 7d | 2011-04-13 A | 2011-06-29 A | SR8S305101C0 | 100% | 2011-04-12 | 2011-04-20 |  |  |  | STRUCTURAL STEEL [1034 h]; Cost | SR8S305103C0 | 95 | SW | C | R8 | S3 | ST | 051 | 03 | BILL 9 | B09 | S2 | 02 | R00 | ACF03 | 051 | Z2 | SW | 5TH | C | A8B | EREC | 6FLR | ST | 20942.42 |  |  |  |
| SR8S205101C0 |  | SW-R8 ; Erection of Structural Steel of Roof Floor (Zone S2) | 12.03d | 2011-04-14 A | 2011-06-29 A | S08S205103C0, SR8SC03305C0 | 100% | 2011-05-07 | 2011-05-21 |  |  |  | STRUCTURAL STEEL [1259 h]; STRUCTURAL STEEL [42 T(Fe)]; Cost | SR8S205101C0 | 95 | SW | C | R8 | S2 | ST | 051 | 01 | BILL 9 | B09 | S2 | 01 | R00 | ACF03 | 051 | Z2 | SW | 5TH | C | A8B | EREC | 6FLR | ST | 97688.8 | ACCESS |  |  |
| SR8S105305C0 |  | SW-R8 ; Metal Decking Lvl - Roof (Zone S1) | 12d | 2011-04-19 A | 2011-05-30 A | SR8S105103C0, T09CO05115C0 | 100% | 2011-04-30 | 2011-05-14 |  |  |  | METAL DECKING [874 h]; METAL DECKING [521 m2]; Cost | SR8S105305C0 | 100 | SW | C | R8 | S1 | ST | 053 | 05 | BILL 9 | B09 | S2 | 03 | R00 | ACF03 | 053 | Z2 | SW | 5TH | C | A8B | MDEC | 6FLR | ST |  |  |  |  |
| SR8S203399C0 |  | SW-R8 ; Concrete on Metal Decking Lvl - Roof (Zone S2) | 10.08d | 2011-05-15 A | 2011-07-31 A | SR8S205305C0 | 100% | 2011-07-07 | 2011-07-19 |  |  |  | CONCRETE [8272 h]; CONCRETE [208 m3]; Cost | SR8S205335C0 | 80 | SW | C | R8 | S2 | CT | 033 | 99 | BILL 9 | B09 | S2 | 08 | R00 | ACF03 | 033 | Z2 | SW | 5TH | C | A8B | MDEC | 6FLR |  | 62140.14 |  |  |  |
| SR8S205103C0 |  | SW-R8 ; Alignment & welding of Roof Floor (Zone S2) | 10d | 2011-05-15 A | 2011-06-28 A | SR8S205101C0 | 100% | 2011-06-08 | 2011-06-20 |  |  |  | STRUCTURAL STEEL [536 h]; Cost | SR8S205103C0 | 95 | SW | C | R8 | S2 | ST | 051 | 03 | BILL 9 | B09 | S2 | 02 | R00 | ACF03 | 051 | Z2 | SW | 5TH | C | A8B | EREC | 6FLR | ST | 10854.32 |  |  |  |
| SR8S205305C0 |  | SW-R8 ; Metal Decking Lvl - Roof (Zone S2) | 13d | 2011-05-15 A | 2011-06-28 A | SR8S205103C0 | 100% | 2011-06-20 | 2011-07-06 |  |  |  | METAL DECKING [1108 h]; METAL DECKING [660 m2]; Cost | SR8S205305C0 | 95 | SW | C | R8 | S2 | ST | 053 | 05 | BILL 9 | B09 | S2 | 03 | R00 | ACF03 | 053 | Z2 | SW | 5TH | C | A8B | MDEC | 6FLR | ST | 9236.6 |  |  |  |
| SR8S303399C0 |  | SW-R8 ; Concrete on Metal Decking Lvl - Roof (Zone S3) | 9d | 2011-05-15 A | 2011-07-31 A | SR8S305305C0 | 100% | 2011-06-21 | 2011-07-03 |  |  |  | CONCRETE [13752 h]; CONCRETE [346 m3]; Cost | SR8S305335C0 | 40 | SW | C | R8 | S3 | CT | 033 | 99 | BILL 9 | B09 | S2 | 08 | R00 | ACF03 | 033 | Z2 | SW | 5TH | C | A8B | MDEC | 6FLR |  | 359673.58 |  |  |  |
| SR8S305305C0 |  | SW-R8 ; Metal Decking Lvl - Roof (Zone S3) | 15d | 2011-05-15 A | 2011-06-29 A | SR8S305103C0 | 100% | 2011-06-04 | 2011-06-21 |  |  |  | METAL DECKING [2136 h]; METAL DECKING [1274 m2]; Cost | SR8S305305C0 | 95 | SW | C | R8 | S3 | ST | 053 | 05 | BILL 9 | B09 | S2 | 03 | R00 | ACF03 | 053 | Z2 | SW | 5TH | C | A8B | MDEC | 6FLR | ST | 17820.81 |  |  |  |
| SR8S103399C0 |  | SW-R8 ; Concrete on Metal Decking Lvl - Roof (Zone S1) | 10d | 2011-06-20 A | 2011-06-30 A | SR8S105305C0 | 100% | 2011-06-30 | 2011-07-11 |  |  |  | CONCRETE [5568 h]; CONCRETE [140 m3]; Cost | SR8S105335C0 |  | SW | C | R8 | S1 | CT | 033 | 99 | BILL 9 | B09 | S2 | 08 | R00 | ACF03 | 033 | Z2 | SW | 5TH | C | A8B | MDEC | 6FLR |  |  |  |  |  |
| SR8S107807C0 |  | SW-R8 ; Cementitious Fire Proofing Lvl - Roof (Zone S1) | 12d | 2011-06-25 A | 2011-06-30 A | S08S107807C0 | 100% | 2011-07-12 | 2011-07-25 |  |  |  | CEMENTITIOUS FIREPROOFING [2072 h]; CEMENTITIOUS FIREPROOFING [4144 m2]; Cost | SR8S107807C0 |  | SW | C | R8 | S1 | ST | 078 | 07 | BILL 9 | B09 | S2 | 04 | R00 | ACF03 | 078 | Z2 | SW | 5TH | C | A8B | FIRE | 6FLR | ST |  |  |  |  |
| SR8S207807C0 |  | SW-R8 ; Cementitious Fire Proofing Lvl - Roof (Zone S2) | 14d | 2011-06-25 A | 2011-08-30 A | S08S207807C0 | 100% | 2011-07-12 | 2011-07-28 |  |  |  | CEMENTITIOUS FIREPROOFING [2627 h]; CEMENTITIOUS FIREPROOFING [5254 m2]; Cost | SR8S207807C0 |  | SW | C | R8 | S2 | ST | 078 | 07 | BILL 9 | B09 | S2 | 04 | R00 | ACF03 | 078 | Z2 | SW | 5TH | C | A8B | FIRE | 6FLR | ST |  |  | 100 | 95 |
| SR8S307807C0 |  | SW-R8 ; Cementitious Fire Proofing Lvl - Roof (Zone S3) | 25d | 2011-06-25 A | 2011-08-30 A | S08S307807C0 | 100% | 2011-07-07 | 2011-08-06 |  |  |  | CEMENTITIOUS FIREPROOFING [5071 h]; CEMENTITIOUS FIREPROOFING [10141 m2]; Cost | SR8S307807C0 |  | SW | C | R8 | S3 | ST | 078 | 07 | BILL 9 | B09 | S2 | 04 | R00 | ACF03 | 078 | Z2 | SW | 5TH | C | A8B | FIRE | 6FLR | ST |  |  | 100 | 95 |
| SR8CO04407C0 |  | SW-R8 ; M2 Bracket (Common Zone) | 24d | 2011-11-14 | 2011-12-14 | SR8S107807C0 FS+89d, SR8S207807C0 FF, SR8S307807C0, S05CO04403C0 |  |  |  | 67.3d | 0d |  | FACADE METAL PANEL 2 [294.4 h]; Cost | SR8CO04407C0 |  | SW | C | R8 | CO | FA | 044 | 07 | BILL 9 | B09 | S2 | FM2 | R00 | ACF05 | 044 |  |  |  |  |  |  |  | FA |  |  |  |  |
| SR8CO04408C0 |  | SW-R8 ; M2 transom & mullion (Common Zone) | 24d | 2011-12-14 | 2012-01-12 | SR8CO04407C0, SR8S103399C0, SR8S203399C0, SR8S303399C0 |  |  |  | 67.3d | 0d |  | FACADE METAL PANEL 2 [1177.8 h]; Cost | SR8CO04408C0 |  | SW | C | R8 | CO | FA | 044 | 08 | BILL 9 | B09 | S2 | FM2 | R00 | ACF05 | 044 |  |  |  |  |  |  |  | FA |  |  |  |  |
| SR8CO04409C0 |  | SW-R8 ; M2 Metal Panel (Common Zone) | 24d | 2012-01-12 | 2012-02-11 | SR8CO04408C0 |  |  |  | 67.3d | 0d |  | FACADE METAL PANEL 2 [766.9 h]; FACADE METAL PANEL 2 [280 m2]; FACADE TOTAL QUANTITY m2 [280 m2]; Cost | SR8CO04409C0 |  | SW | C | R8 | CO | FA | 044 | 09 | BILL 9 | B09 | S2 | FM2 | R00 | ACF05 | 044 |  |  |  |  |  |  |  | FA |  |  |  |  |
| SR8CO04403C0 |  | SW-R8 ; Louvers Bracket (Common Zone) | 42d | 2012-06-30 | 2012-08-18 | SR8S107807C0, SR8S207807C0, SR8S307807C0, SR8CO04407C0 SS, SEXCO04405C0 |  |  |  | 40.58d | 0d | start on or after 2012-01-05 | FACADE SAND LOUVERS [144.1 h]; Cost | SR8CO04403C0 |  | SW | C | R8 | CO | FA | 044 | 03 | BILL 9 | B09 | S2 | FSL | R00 | ACF05 | 044 |  |  |  |  |  |  |  | FA |  |  |  |  |
| SR8CO04406C0 |  | SW-R8 ; Louvers Glass Transom & Mullion (Common Zone) | 42d | 2012-08-18 | 2012-10-08 | SR8CO04403C0 |  |  |  | 44.08d | 0d |  | FACADE SAND LOUVERS [577.3 h]; Cost | SR8CO04406C0 |  | SW | C | R8 | CO | FA | 044 | 06 | BILL 9 | B09 | S2 | FSL | R00 | ACF05 | 044 |  |  |  |  |  |  |  | FA |  |  |  |  |
| SR8CO04421C0 |  | SW-R8 ; PSG Steel grill transom & mullion (Common Zone) | 42d | 2012-08-18 | 2012-10-08 | SR8CO04403C0, SR8S107807C0, SR8S207807C0, SR8S307807C0 |  |  |  | 40.58d | 0d |  | FACADE STEEL GRILL [175.2 h]; Cost | S05CO04411C0 |  | SW | C | R8 | CO | FA | 044 | 11 | BILL 9 | B09 | S2 | PSG | R00 | ACF05 | 044 |  |  |  |  |  |  |  | FA |  |  |  |  |
| SR8CO04405C0 |  | SW-R8 ; Louvers Glass installation (Common Zone) | 42d | 2012-10-08 | 2012-11-29 | SR8CO04406C0 |  |  |  | 44.08d | 0d |  | FACADE SAND LOUVERS [1861.2 h]; FACADE SAND LOUVERS [680 m2]; FACADE TOTAL QUANTITY m2 [680 m2]; Cost | SR8CO04405C0 |  | SW | C | R8 | CO | FA | 044 | 05 | BILL 9 | B09 | S2 | FSL | R00 | ACF05 | 044 |  |  |  |  |  |  |  | FA |  |  |  |  |
| SR8CO04415C0 |  | SW-R8 ; PSG Steel grill Bracket (Common Zone) | 42d | 2012-10-08 | 2012-11-29 | SR8CO04419C0 SS |  |  |  | 40.58d | 0d |  | FACADE STEEL GRILL [44.1 h]; Cost | S05CO04405C0 |  | SW | C | R8 | CO | FA | 044 | 05 | BILL 9 | B09 | S2 | PSG | R00 | ACF05 | 044 |  |  |  |  |  |  |  | FA |  |  |  |  |
| SR8CO04419C0 |  | SW-R8 ; PSG Steel grill installation (Common Zone) | 42d | 2012-10-08 | 2012-11-29 | SR8CO04421C0 |  |  |  | 40.58d | 0d |  | FACADE STEEL GRILL [547.2 h]; FACADE STEEL GRILL [400 m2]; FACADE TOTAL QUANTITY m2 [400 m2]; Cost | S05CO04409C0 |  | SW | C | R8 | CO | FA | 044 | 09 | BILL 9 | B09 | S2 | PSG | R00 | ACF05 | 044 |  |  |  |  |  |  |  | FA |  |  |  |  |
