# CCAD CPM Rev.3 dt 24-Oct-2011 (Subcontractor Copy)

Schedule from Primavera P6, 2010-03-07 to 2092-10-21, data date 2011-09-30, costs in EGP, A marks actual dates.
Must finish by 2013-07-04

| ID | WBS | Activity | Duration | Start | Finish | Predecessors | Complete | Remaining | Planned start | Planned finish | Total float | Free float | Resources | Cost | Actual cost | Change Order # | NEW ACTIVITY ID | change id | CCAD BUILDING(SET) | CCAD PHASE(SET) | CCAD DIVISION(SET) | CCAD FLOOR(SET) | CCAD ZONE(SET) | CCAD WORK(SET) | CCAD SECTION(SET) | CCAD SERIAL No.(SET) | CCAD CBS(SET) | CCAD BILL(SET) | CCAD HANDOVER(SET) | CCAD TAG(SET) | CCAD REV(SET) | CCADACF (SET) | CCAD SSCF | P_811 | P_711 | CCAD CSA | Act Selector % | user_number8 | user_integer1 | user_integer2 | user_number7 | U% | CCAD SUB ZONE MEP(SET) | CCAD MEQ | TO BE DELETED |
| --- | --- | --- | --- | --- | --- | --- | --- | --- | --- | --- | --- | --- | --- | --- | --- | --- | --- | --- | --- | --- | --- | --- | --- | --- | --- | --- | --- | --- | --- | --- | --- | --- | --- | --- | --- | --- | --- | --- | --- | --- | --- | --- | --- | --- | --- |
|  | 02 | **Roof** |  | 2012-02-11 | 2012-03-07 |  |  |  |  |  |  |  |  |  |  |  |  |  |  |  |  |  |  |  |  |  |  |  |  |  |  |  |  |  |  |  |  |  |  |  |  |  |  |  |  |
| SR8RF07101C0 |  | SW-R8 ; Water Proofing Membrane (Roof) | 10d | 2012-02-11 | 2012-02-22 | SR8BM03301C0, SR8CO04408C0, SR8CO04409C0, SV09GZ07105R2 |  |  |  |  | 67.3d | 0d | THERMAL & MOISTURE [936 h]; Cost |  |  | 302 | 335 | SR8RF07101C0 | SW | C | 03 | R8 | RF | FF | 071 | 01 | BILL 9 | B09 | S2 | 01 | R00 | ACF03 | 071 |  |  |  |  |  |  |  |  |  |  |  |  |
| SR8RF09601C0 |  | SW-R8 ; Paving / Surfacing (Roof) | 12d | 2012-02-22 | 2012-03-07 | SR8RF07101C0 |  |  |  |  | 67.3d | 0d | ASSORTED FLOOR FINISH [72 h]; Cost |  |  | 302 | 335 | SR8RF09601C0 | SW | C | 03 | R8 | RF | FF | 096 | 01 | BILL 9 | B09 | S2 | 08 | R00 | ACF09 | PV |  |  |  |  |  |  |  |  |  |  |  |  |
|  | 03 | **Public Area ( Elev.Lobby & Corridors )** |  | 2011-08-10 | 2012-12-30 |  |  |  |  |  |  |  |  |  |  |  |  |  |  |  |  |  |  |  |  |  |  |  |  |  |  |  |  |  |  |  |  |  |  |  |  |  |  |  |  |
| SR8PA09201C0 |  | SW-R8 ; Metal Studs (Public Area) | 42d | 2011-08-10 A | 2011-11-16 | SR8PA23001C0 SS+12d | 10% | 37.8d | 2011-08-15 | 2011-10-05 | 63.45d | 0d | PARTITIONS [751 h]; PARTITIONS - Metal Studs [231 m]; Cost |  |  | 313 | 944 | I08PA09201C0 | SW | C |  | R8 | PA | PT | 092 | 01 | BILL 9 | B09 | S2 | 1F | R00 | ACF06 | 092 | 10 | 0 | GP | PMS |  |  |  |  |  |  |  |  |
| SR8PA21111C0 |  | SW-R8 ; 1st Fix, Inst of Sprinkler main pipe (Public Area) | 60d | 2011-08-10 A | 2011-10-10 | SR8PA23001C0 SS | 85% | 9d | 2011-11-15 | 2012-01-28 | 97.25d | 21d | MECHANICAL [793.2 h]; Cost [43268 AED] | 43,267.97 | 36,777.77 |  |  | I08PA21111C0 | SW | C |  | R8 | PA | ME | 211 | 11 | BILL 9 | B09 | S2 | 1F | R00 | ACF04 | 211 | 15 | 0 | MEP | M1F | 0 | 0 | 0 | 0 | 85 | 1S |  |  |
| SR8PA21117C0 |  | SW-R8 ; 1st Fix, Inst of Sprinkler branch pipe (Public Area) | 60d | 2011-08-10 A | 2011-11-28 | SR8PA09201C0, SR8PA21111C0 SS | 85% | 9d | 2012-01-03 | 2012-03-14 | 168.45d | 121.15d | MECHANICAL [682.8 h]; Cost [37306.8 AED] | 37,306.8 | 31,710.78 |  |  | I08PA21117C0 | SW | C |  | R8 | PA | ME | 211 | 17 | BILL 9 | B09 | S2 | 1F | R00 | ACF04 | 211 | 15 | 0 | MEP | M1F | 0 | 0 | 0 | 0 | 85 | 1S |  |  |
| SR8PA22019C0 |  | SW-R8 ; 1st Fix, Inst of Drainage pipe (ceiling) (Public Area) | 48d | 2011-09-05 A | 2011-12-20 | SR8PA23001C0, SR8PA26013C0 SS+14d | 10% | 43.2d | 2011-12-10 | 2012-02-05 | 74.25d | 0d | PLUMBING [310.8 h]; Cost [16770.4 AED] | 16,770.39 | 1,677.04 |  |  | I08PA22019C0 | SW | C |  | R8 | PA | ME | 220 | 19 | BILL 9 | B09 | S2 | 1F | R00 | ACF04 | 220 |  |  | MEP | M1F |  |  |  |  |  | 1S |  |  |
| SR8PA23001C0 |  | SW-R8 ; 1st Fix, Inst. of Supports for MEP (Public Area) | 42d | 2011-09-05 A | 2011-10-24 | SR8S107807C0, SR8S207807C0, SR8S307807C0 | 50% | 21d | 2011-09-01 | 2011-10-19 | 63.45d | 0d | MECHANICAL [536.4 h]; Cost [30275.7 AED] | 30,275.67 | 15,137.83 |  |  | I08PA23001C0 | SW | C |  | R8 | PA | ME | 230 | 01 | BILL 9 | B09 | S2 | 1F | R00 | ACF04 | 230 |  |  | MEP | M1F |  |  |  |  |  | 1S |  |  |
| SR8PA26001C0 |  | SW-R8 ; 1st Fix, Inst of Trunking/Conduiting (Public Area) | 48d | 2011-09-05 A | 2011-12-20 | SR8PA23001C0, SR8S107807C0, SR8S207807C0, SR8S307807C0 | 10% | 43.2d | 2011-10-20 | 2011-12-20 | 74.25d | 0d | ELECTRICAL [447.6 h]; Cost [24105.1 AED] | 24,105.11 | 2,410.51 |  |  | I08PA26001C0 | SW | C |  | R8 | PA | ME | 260 | 01 | BILL 9 | B09 | S2 | 1F | R00 | ACF04 | 260 |  |  | MEP | M1F |  |  |  |  |  | 1S |  |  |
| SR8PA26013C0 |  | SW-R8 ; 1st Fix, Inst of Cable Tray (Public Area) | 48d | 2011-09-05 A | 2011-12-20 | SR8PA23001C0, SR8PA27010C0 SS+10d, SR8S107807C0, SR8S207807C0, SR8S307807C0 | 10% | 43.2d | 2011-11-21 | 2012-01-18 | 74.25d | 0d | ELECTRICAL [231.6 h]; Cost [13047.4 AED] | 13,047.37 | 1,304.74 |  |  | I08PA26013C0 | SW | C |  | R8 | PA | ME | 260 | 13 | BILL 9 | B09 | S2 | 1F | R00 | ACF04 | 260 |  |  | MEP | M1F |  |  |  |  | 10 | 1S |  |  |
| SR8PA27010C0 |  | SW-R8 ; 1st Fix, Inst of Trunking for ELV system (Public Area) | 48d | 2011-09-05 A | 2011-12-20 | SR8PA23001C0, SR8PA26001C0 SS+14d, SR8S107807C0, SR8S207807C0, SR8S307807C0 | 10% | 43.2d | 2011-11-09 | 2012-01-07 | 74.25d | 0d | ELECTRICAL [991.2 h]; Cost [51056.8 AED] | 51,056.81 | 5,105.68 |  |  | I08PA27010C0 | SW | C |  | R8 | PA | ME | 270 | 10 | BILL 9 | B09 | S2 | 1F | R00 | ACF04 | 270 |  |  | MEP | M1F |  |  |  |  |  | 1S |  |  |
| SR8PA22005C0 |  | SW-R8 ; 1st Fix, Inst of Water supply pipe (ceiling) (Public Area) | 54d | 2011-10-25 | 2012-01-02 | SR8PA22019C0 SS+10d, SR8PA23001C0 |  |  |  |  | 74.25d | 26.95d | PLUMBING [1688.4 h]; Cost |  |  |  |  | I08PA22005C0 | SW | C |  | R8 | PA | ME | 220 | 05 | BILL 9 | B09 | S2 | 1F | R00 | ACF04 | 220 |  |  | MEP | M1F |  |  |  |  |  | 1S |  |  |
| SR8PA23017C0 |  | SW-R8 ; 1st Fix, Inst of CHW pipe (Public Area) | 54d | 2011-10-25 | 2012-01-02 | SR8PA21111C0 SS+12d, SR8PA23001C0 |  |  |  |  | 76.25d | 0d | MECHANICAL [1687.2 h]; Cost |  |  |  |  | I08PA23017C0 | SW | C |  | R8 | PA | ME | 230 | 17 | BILL 9 | B09 | S2 | 1F | R00 | ACF04 | 230 |  |  | MEP | M1F |  |  |  |  |  | 1S |  |  |
| SR8PA23023C0 |  | SW-R8 ; 1st Fix, Inst of Main Ducting (Public Area) | 60d | 2011-11-09 | 2012-01-21 | SR8PA23001C0, SR8PA23017C0 SS+10d |  |  |  |  | 76.25d | 0d | MECHANICAL [6650.4 h]; Cost |  |  |  |  | I08PA23023C0 | SW | C |  | R8 | PA | ME | 230 | 23 | BILL 9 | B09 | S2 | 1F | R00 | ACF04 | 230 |  |  | MEP | M1F |  |  |  |  |  | 1S |  |  |
| SR8PA08103C0 |  | SW-R8 ; Door Frames (Public Area) | 24d | 2011-11-16 | 2011-12-17 | SR8PA09201C0, GNHE08101C0 FS+69d |  |  |  |  | 129.45d | 82.15d | ASSORTED DOORS [32 h]; Cost |  |  | 316 | 947 | I08PA08103C0 | SW | C | 08 | R8 | PA | DO | 081 | 03 | BILL 9 | B09 | S2 | DF | R00 | ACF06 | 081 |  |  |  |  |  |  |  |  |  |  |  |  |
| SR8PA22011C0 |  | SW-R8 ; 2nd Fix, Drainage/Water pipe (wall) (Public Area) | 42d | 2011-11-16 | 2012-01-08 | SR8PA09201C0 |  |  |  |  | 63.45d | 0d | PLUMBING [310.8 h]; Cost |  |  |  |  | I08PA22011C0 | SW | C |  | R8 | PA | ME | 220 | 11 | BILL 9 | B09 | S2 | 2F | R00 | ACF07 | 220 |  |  | MEP |  |  |  |  |  |  | 2n |  |  |
| SR8PA26009C0 |  | SW-R8 ; 2nd Fix, Inst of Wall conduites (Public Area) | 42d | 2011-11-16 | 2012-01-08 | SR8PA09201C0 |  |  |  |  | 63.45d | 0d | ELECTRICAL [447.6 h]; Cost |  |  |  |  | I08PA26009C0 | SW | C |  | R8 | PA | ME | 260 | 09 | BILL 9 | B09 | S2 | 2F | R00 | ACF07 | 260 |  |  | MEP |  |  |  |  |  |  | 2n |  |  |
| SR8PA40302C0 |  | SW-R8 ; 2nd Fix, Pneumatic tube (Public Area) | 42d | 2011-11-16 | 2012-01-08 | SR8PA09201C0 |  |  |  |  | 63.45d | 0d | MECHANICAL [1036.8 h]; Cost |  |  |  |  | C03E140302C0 | SW | C |  | R8 | PA | ME | 403 | 02 | BILL 9 | B09 | S2 | 2F | R00 | ACF07 | 403 |  |  | MEP |  |  |  |  |  |  | 2n |  |  |
| SR8PA27001C0 |  | SW-R8 ; 1st Fix, Wiring/ Cabling work (Public Area) | 48d | 2011-12-20 | 2012-02-16 | SR8PA26001C0, SR8PA26013C0, SR8PA27010C0 |  |  |  |  | 103.05d | 55.75d | ELECTRICAL [241.2 h]; Cost |  |  |  |  | I08PA27001C0 | SW | C |  | R8 | PA | ME | 270 | 01 | BILL 9 | B09 | S2 | 1F | R00 | ACF04 | 270 |  |  | MEP | M1F |  |  |  |  |  | 1S |  |  |
| SR8PA09203C0 |  | SW-R8 ; Partitions early wall & 1st face (Public Area) | 36d | 2011-12-21 | 2012-02-02 | SAFAF26039C0, SAFAF26041C0 FF, SAFAF26045C0, SR8PA09201C0 |  |  |  |  | 47.3d | 0d | PARTITIONS [231 m]; PARTITIONS [596 h]; Cost |  |  | 314 | 945 | I08PA09203C0 | SW | C |  | R8 | PA | PT | 092 | 03 | BILL 9 | B09 | S2 | 2F | R00 | ACF06 | 092 |  |  | GP | P1F |  |  |  |  |  |  |  |  |
| SR8PA23009C0 |  | SW-R8 ; 2nd Fix, Inst of VAV'S CHW connection (Public Area) | 42d | 2012-01-03 | 2012-02-21 | SR8PA23017C0 |  |  |  |  | 98.25d | 50.95d | MECHANICAL [1018.8 h]; Cost |  |  |  |  | I08PA23009C0 | SW | C |  | R8 | PA | ME | 230 | 09 | BILL 9 | B09 | S2 | 2F | R00 | ACF07 | 230 |  |  | MEP |  |  |  |  |  |  | 2n |  |  |
| SR8PA01005C0 |  | SW-R8 ; 2nd, Wall Inspection by Consultant (Public Area) | 6d | 2012-01-08 | 2012-01-15 | SR8PA22011C0, SR8PA26009C0, SR8PA40302C0 |  |  |  |  | 63.45d | 16.15d | Labor General [0.6 h]; Cost |  |  |  |  | I08PA01005C0 | SW | C |  | R8 | PA | ME | 010 | 05 | BILL 9 | B09 | S2 | WI | R00 | ACF07 | 010 |  |  | MEP |  |  |  |  |  |  | 2n |  |  |
| SR8PA23008C0 |  | SW-R8 ; 1st Fix, Inst of VCD's/FD's (Public Area) | 48d | 2012-01-22 | 2012-03-18 | SR8PA23023C0 |  |  |  |  | 76.25d | 28.95d | MECHANICAL [1111.2 h]; Cost |  |  |  |  | I08PA23008C0 | SW | C |  | R8 | PA | ME | 230 | 08 | BILL 9 | B09 | S2 | 1F | R00 | ACF04 | 230 |  |  | MEP | M1F |  |  |  |  |  | 1S |  |  |
| SR8PA23015C0 |  | SW-R8 ; 2nd Fix, Insulation of CHW pipe & Duct (Public Area) | 48d | 2012-01-22 | 2012-03-18 | SR8PA23017C0, SR8PA23023C0 |  |  |  |  | 76.25d | 28.95d | MECHANICAL [3716.4 h]; Cost |  |  |  |  | I08PA23015C0 | SW | C |  | R8 | PA | ME | 230 | 15 | BILL 9 | B09 | S2 | 2F | R00 | ACF07 | 230 |  |  | MEP |  |  |  |  |  |  | 2n |  |  |
| SR8PA09205C0 |  | SW-R8 ; Partitions Closing (Public Area) | 42d | 2012-02-02 | 2012-03-24 | SAFOA09212C1 FF, SR8PA01005C0, SR8PA09203C0, SR8PA22005C0, SR8PA22019C0, SR8PA08103C0 FF |  |  |  |  | 47.3d | 0d | PARTITIONS [231 m]; PARTITIONS [760 h]; Cost |  |  | 315 | 946 | I08PA09205C0 | SW | C |  | R8 | PA | PT | 092 | 05 | BILL 9 | B09 | S2 | FF | R00 | ACF06 | 092 |  |  | GP | P2F |  |  |  |  |  |  |  |  |
| SR8PA09901C0 |  | SW-R8 ; Wall Prime & 1st coat (Public Area) | 24d | 2012-03-24 | 2012-04-21 | SR8PA09205C0 |  |  |  |  | 47.3d | 0d | WALL PAINT [398 h]; WALL PAINT [496 m2]; Cost |  |  | 328 | 956 | I08PA09901C0 | SW | C |  | R8 | PA | PA | 099 | 01 | BILL 9 | B09 | S2 | 01 | R00 | ACF06 | 099 |  |  |  |  |  |  |  |  |  |  |  |  |
| SR8PA26005C0 |  | SW-R8 ; 2nd Fix, Wiring for Power/Lighting/Emergency (Public Area) | 42d | 2012-03-24 | 2012-05-12 | SR8PA09205C0 |  |  |  |  | 113.3d | 0d | ELECTRICAL [241.2 h]; Cost |  |  |  |  | I08PA26005C0 | SW | C |  | R8 | PA | ME | 260 | 05 | BILL 9 | B09 | S2 | 2F | R00 | ACF07 | 260 |  |  | MEP |  |  |  |  |  |  | 2n |  |  |
| SR8PA26007C0 |  | SW-R8 ; 2nd Fix, Cable Pulling (Public Area) | 42d | 2012-03-24 | 2012-05-12 | SR8PA09201C0, SR8PA09205C0 |  |  |  |  | 155.3d | 108d | ELECTRICAL [1532.4 h]; Cost |  |  |  |  | I08PA26007C0 | SW | C |  | R8 | PA | ME | 260 | 07 | BILL 9 | B09 | S2 | 2F | R00 | ACF07 | 260 |  |  | MEP |  |  |  |  |  |  | 2n |  |  |
| SR8PA26011C0 |  | SW-R8 ; 2nd Fix, Inst of Equipment (DB) (Public Area) | 48d | 2012-03-24 | 2012-05-19 | SR8PA09205C0 |  |  |  |  | 113.3d | 66d | ELECTRICAL [646.8 h]; Cost |  |  |  |  | I08PA26011C0 | SW | C |  | R8 | PA | ME | 260 | 11 | BILL 9 | B09 | S2 | 2F | R00 | ACF04 | 260 |  |  | MEP |  |  |  |  |  |  | 2n | E |  |
| SR8PA26053C0 |  | SW-R8 ; 2nd Fix, Wiring / Cabling (Public Area) | 42d | 2012-03-24 | 2012-05-12 | SR8PA09203C0, SR8PA09205C0 |  |  |  |  | 65.3d | 18d | ELECTRICAL [241.2 h]; Cost |  |  | 389 | 977 | I08PA26053C0 | SW | C |  | R8 | PA | ME | 260 | 53 | BILL 9 | B09 | S2 | 2F | R00 | ACF07 | 260 |  |  | MEP |  |  |  |  |  |  | 2n |  |  |
| SR8PA05501C0 |  | SW-R8 ; Handrails & balustrade (Public Area) | 33.75d | 2012-04-21 | 2012-05-30 | SR8PA09901C0, SAFT1505509C0, SAFT105509C0, SAFT1105509C0, SAFT2305509C0 |  |  |  |  | 103.55d | 2.25d | SECONDARY STEEL [670 h]; Cost |  |  |  |  | I08PA05501C0 | SW | C |  | R8 | PA | SW | 055 | 01 | BILL 9 | B09 | S2 | 01 | R00 | ACF03 | a |  |  |  |  |  |  |  |  |  |  |  |  |
| SR8PA09501C0 |  | SW-R8 ; Ceiling Grid and Service Tile (Public Area) | 36d | 2012-04-21 | 2012-06-02 | SR8PA09205C0 SS+15d, SR8PA21117C0, SR8PA23008C0, SR8PA23009C0, SR8PA23015C0, SR8PA27001C0, SR8PA26053C0 FF, SR8PA09901C0 |  |  |  |  | 47.3d | 0d | CEILING GRID FOR GYPSUM [1022.7 h]; CEILING GRID FOR GYPSUM [87.34 m2]; Cost |  |  | 323 | 952 | I08PA09501C0 | SW | C |  | R8 | PA | CE | 095 | 01 | BILL 9 | B09 | S2 | 01 | R00 | ACF06 | 095 |  |  |  |  |  |  |  |  |  |  |  |  |
| SR8PA26015C0 |  | SW-R8 ; Final Fix, Termination & Gladding of Cables (Public Area) | 36d | 2012-05-12 | 2012-06-24 | SR8PA26005C0 |  |  |  |  | 113.3d | 60d | ELECTRICAL [85.2 h]; Cost |  |  |  |  | I08PA26015C0 | SW | C |  | R8 | PA | ME | 260 | 15 | BILL 9 | B09 | S2 | FF | R00 | ACF07 | 260 |  |  | MEP |  |  |  |  |  |  | FF |  |  |
| SR8PA08107C0 |  | SW-R8 ; Doors (Public Area) | 16d | 2012-06-02 | 2012-06-21 | SR8PA08103C0, SR8PA09501C0, SR8PA09601C0, SR8PA09901C0 |  |  |  |  | 156.55d | 0d | ASSORTED DOORS [80 h]; ASSORTED DOORS [8 no]; Cost |  |  | 317 | 948 | I08PA08107C0 | SW | C | 08 | R8 | PA | DO | 081 | 07 | BILL 9 | B09 | S2 | DR | R00 | ACF06 | 081 |  |  |  |  |  |  |  |  |  |  |  |  |
| SR8PA09601C0 |  | SW-R8 ; Floor Finishes (Public Area) | 0d | 2012-06-02 | 2012-06-02 | OGNMU00035S0, SR8PA09501C0, SR8PA05501C0 FF |  |  |  |  | 101.3d | 0d | Cost |  |  | 326 | 955 | I08PA09601C0 | SW | C |  | R8 | PA | FF | 096 | 01 | BILL 9 | B09 | S2 | 01 | R00 | ACF06 | FF |  |  |  |  |  |  |  |  |  |  |  | RENAME |
| SR8PA09905C0 |  | SW-R8 ; Ceiling Prime & 1st coat (Public Area) | 24d | 2012-06-02 | 2012-07-01 | SR8PA09501C0 |  |  |  |  | 89.3d | 0d | CEILING PAINT [60 h]; CEILING PAINT [74 m2]; Cost |  |  | 330 | 958 | I08PA09905C0 | SW | C |  | R8 | PA | PA | 099 | 05 | BILL 9 | B09 | S2 | 01 | R00 | ACF06 | 099 |  |  |  |  |  |  |  |  |  |  |  |  |
| SR8PA21115C0 |  | SW-R8 ; 2nd Fix, Inst of Sprinkler droppers (Public Area) | 42d | 2012-06-02 | 2012-07-22 | SR8PA09501C0 |  |  |  |  | 53.3d | 0d | MECHANICAL [1309.2 h]; Cost |  |  |  |  | I08PA21115C0 | SW | C |  | R8 | PA | ME | 211 | 15 | BILL 9 | B09 | S2 | 2F | R00 | ACF07 | 211 |  |  | MEP |  |  |  |  |  |  | 2n |  |  |
| SR8PA23021C0 |  | SW-R8 ; 2nd Fix, Inst of Flexible Duct & Plenum boxes (Public Area) | 42d | 2012-06-02 | 2012-07-22 | SR8PA09205C0, SR8PA09501C0 |  |  |  |  | 53.3d | 0d | MECHANICAL [166.8 h]; Cost |  |  |  |  | I08PA23021C0 | SW | C |  | R8 | PA | ME | 230 | 21 | BILL 9 | B09 | S2 | 2F | R00 | ACF07 | 230 |  |  | MEP |  |  |  |  |  |  | 2n |  |  |
| SR8PA26017C0 |  | SW-R8 ; Final Fix, Inst of Ceiling rose (Public Area) | 36d | 2012-06-02 | 2012-07-15 | SR8PA09501C0 |  |  |  |  | 53.3d | 0d | ELECTRICAL [36 h]; Cost |  |  |  |  | I08PA26017C0 | SW | C |  | R8 | PA | ME | 260 | 17 | BILL 9 | B09 | S2 | FF | R00 | ACF07 | 260 |  |  | MEP |  |  |  |  |  |  | FF |  |  |
| SR8PA27002C0 |  | SW-R8 ; 2nd Fix, Wiring Droppers (Public Area) | 42d | 2012-06-02 | 2012-07-22 | SR8PA09501C0 |  |  |  |  | 53.3d | 0d | ELECTRICAL [241.2 h]; Cost |  |  |  |  | I08PA27002C0 | SW | C |  | R8 | PA | ME | 270 | 02 | BILL 9 | B09 | S2 | 2F | R00 | ACF07 | 270 |  |  | MEP |  |  |  |  |  |  | 2n |  |  |
| SR8PA27020C0 |  | SW-R8 ; 2nd Fix, Inst of ELV Equipment (Panels) (Public Area) | 54d | 2012-06-02 | 2012-08-05 | SR8PA09205C0, SR8PA09501C0 |  |  |  |  | 47.3d | 0d | ELECTRICAL [1868.4 h]; Cost |  |  |  |  | I08PA27020C0 | SW | C |  | R8 | PA | ME | 270 | 20 | BILL 9 | B09 | S2 | 2F | R00 | ACF04 | 270 |  |  | MEP |  |  |  |  |  |  | 2n | E |  |
| SR8PA40303C0 |  | SW-R8 ; Final Fix, Pneumatic Station (Public Area) | 36d | 2012-06-02 | 2012-07-15 | SR8PA09501C0 |  |  |  |  | 95.3d | 42d | MECHANICAL [1036.8 h]; Cost |  |  |  |  | C03E140303C0 | SW | C |  | R8 | PA | ME | 403 | 03 | BILL 9 | B09 | S2 | FF | R00 | ACF07 | 403 |  |  | MEP |  |  |  |  |  |  | FF |  |  |
| SR8PA08709C0 |  | SW-R8 ; Ironmongery (Public Area) | 16.5d | 2012-06-21 | 2012-07-11 | SR8PA08107C0 |  |  |  |  | 156.55d | 115.97d | IRONMONGERY [210 h]; IRONMONGERY [21 no]; Cost |  |  | 322 | 951 | I08PA08709C0 | SW | C | 08 | R8 | PA | DO | 087 | 09 | BILL 9 | B09 | S2 | IM | R00 | ACF06 | 087 |  |  |  |  |  |  |  |  |  |  |  |  |
| SR8PA09903C0 |  | SW-R8 ; Wall Final Paint (Public Area) | 24d | 2012-07-01 | 2012-07-29 | SR8PA09901C0, SR8PA09905C0 |  |  |  |  | 89.3d | 42d | WALL PAINT [215 h]; WALL PAINT [267 m2]; Cost |  |  | 329 | 957 | I08PA09903C0 | SW | C |  | R8 | PA | PA | 099 | 03 | BILL 9 | B09 | S2 | 02 | R00 | ACF06 | 099 |  |  |  |  |  |  |  |  |  |  |  |  |
| SR8PA26003C0 |  | SW-R8 ; Final Fix, Inst of Light fittings (Public Area) | 42d | 2012-07-15 | 2012-09-04 | SR8PA09501C0, SR8PA26017C0 |  |  |  |  | 53.3d | 0d | ELECTRICAL [4813.2 h]; Cost |  |  |  |  | I08PA26003C0 | SW | C |  | R8 | PA | ME | 260 | 03 | BILL 9 | B09 | S2 | FF | R00 | ACF07 | 260 |  |  | MEP |  |  |  |  |  |  | FF |  |  |
| SR8PA21113C0 |  | SW-R8 ; Final Fix, Inst of Sprinklers head/ Extinguisher (Public Area) | 36d | 2012-07-22 | 2012-09-04 | SR8PA09501C0, SR8PA21115C0 |  |  |  |  | 53.3d | 0d | MECHANICAL [237.6 h]; Cost |  |  |  |  | I08PA21113C0 | SW | C |  | R8 | PA | ME | 211 | 13 | BILL 9 | B09 | S2 | FF | R00 | ACF07 | 211 |  |  | MEP |  |  |  |  |  |  | FF |  |  |
| SR8PA23019C0 |  | SW-R8 ; Final Fix, Inst of Grilles & Diffusers (Public Area) | 36d | 2012-07-22 | 2012-09-04 | SR8PA09501C0, SR8PA23021C0 |  |  |  |  | 53.3d | 0d | MECHANICAL [835.2 h]; Cost |  |  |  |  | I08PA23019C0 | SW | C |  | R8 | PA | ME | 230 | 19 | BILL 9 | B09 | S2 | FF | R00 | ACF07 | 230 |  |  | MEP |  |  |  |  |  |  | FF |  |  |
| SR8PA27030C0 |  | SW-R8 ; Final Fix, Inst of ELV device (Detector/Speaker) (Public Area) | 36d | 2012-07-22 | 2012-09-04 | SR8PA09501C0, SR8PA09501C0 FF, SR8PA27002C0 |  |  |  |  | 53.3d | 0d | ELECTRICAL [1348.8 h]; Cost |  |  |  |  | I08PA27030C0 | SW | C |  | R8 | PA | ME | 270 | 30 | BILL 9 | B09 | S2 | FF | R00 | ACF07 | 270 |  |  | MEP |  |  |  |  |  |  | FF |  |  |
| SR8PA09701C0 |  | SW-R8 ; Wall finishes (ST, WD, WC) (Public Area) | 36d | 2012-08-05 | 2012-09-18 | SR8PA26011C0, SR8PA27020C0, SR8PA09601C0 |  |  |  |  | 47.3d | 0d | ASSORTED WALL FINISH [1054 h]; ASSORTED WALL FINISH [1211 m2]; Cost |  |  | 105 | 1002 | I08PA09701C0 | SW | C |  | R8 | PA | WF | 097 | 01 | BILL 9 | B09 | S2 | 01 | R00 | ACF06 | 097 |  |  |  |  |  |  |  |  |  |  |  |  |
| SR8PA01006C0 |  | SW-R8 ; 2nd, Ceiling Inspection by Consultants (Public Area) | 6d | 2012-09-04 | 2012-09-11 | SR8PA21115C0, SR8PA23009C0, SR8PA23015C0, SR8PA27002C0, SR8PA09501C0, SR8PA21113C0, SR8PA23019C0, SR8PA26003C0, SR8PA26017C0, SR8PA27030C0, SR8PA40303C0, SR8PA26015C0 |  |  |  |  | 53.3d | 6d | Labor General [0.6 h]; Cost |  |  |  |  | I08PA01006C0 | SW | C |  | R8 | PA | ME | 010 | 06 | BILL 9 | B09 | S2 | CI | R00 | ACF07 | 010 |  |  | MEP |  |  |  |  |  |  | 2n |  |  |
| SR8PA09503C0 |  | SW-R8 ; Ceiling closure - ACT/Gypsum (Public Area) | 21.75d | 2012-09-18 | 2012-10-14 | SR8PA01006C0, SR8PA21115C0, SR8PA26005C0, SR8PA27001C0, SR8PA27002C0, SR8PA09701C0, SR8PA23021C0, SR8PA26007C0, SR8PA09903C0 |  |  |  |  | 47.3d | 0d | ASSORTED CEILING FINISH [962.48 h]; CEILING GYPSUM [28.7 h]; ASSORTED CEILING FINISH [1565 m2]; CEILING GYPSUM [87 m2]; Cost |  |  | 324 | 953 | I08PA09503C0 | SW | C |  | R8 | PA | CE | 095 | 03 | BILL 9 | B09 | S2 | 02 | R00 | ACF06 | 095 |  |  |  |  |  |  |  |  |  |  |  |  |
| SR8PA11001C0 |  | SW-R8 ; Wall Protection (WP, CG, WG, FCG) (Public Area) | 24d | 2012-09-18 | 2012-10-16 | SR8PA09701C0, SR8PA09903C0 SS |  |  |  |  | 75.05d | 34.47d | Labor General [2 h]; Cost |  |  | 326 | 1001 | I08PA11001C0 | SW | C |  | R8 | PA | WF | 110 | 01 | BILL 9 | B09 | S2 | 03 | R00 | ACF08 | b |  |  |  |  |  |  |  |  |  |  |  |  |
| SR8PA11009C0 |  | SW-R8 ; Signage (Public Area) | 14d | 2012-09-18 | 2012-10-04 | SR8PA09701C0 |  |  |  |  | 85.05d | 44.47d | SIGNAGES [62 h]; SIGNAGES [61.77 no]; Cost |  |  | 322 | 951 | I08PA11009C0 | SW | C | 08 | R8 | PA | SA | 110 | 09 | BILL 9 | B09 | S2 | 09 | R00 | ACF08 | c |  |  |  |  |  |  |  |  |  |  |  |  |
| SR8PA09907C0 |  | SW-R8 ; Ceiling Final paint (Public Area) | 18d | 2012-10-14 | 2012-11-06 | SR8PA09601C0, SR8PA09905C0, SR8PA09503C0 |  |  |  |  | 59.3d | 18.72d | CEILING PAINT [33 h]; CEILING PAINT [40 m2]; Cost |  |  | 331 | 959 | I08PA09907C0 | SW | C |  | R8 | PA | PA | 099 | 07 | BILL 9 | B09 | S2 | 02 | R00 | ACF06 | 099 |  |  |  |  |  |  |  |  |  |  |  |  |
| SR8PA26019C0 |  | SW-R8 ; Final Fix, Inst of Switch/Sockets (Public Area) | 18d | 2012-10-14 | 2012-11-06 | SR8PA09901C0, SR8PA26015C0, SR8PA09503C0 |  |  |  |  | 47.3d | 0d | ELECTRICAL [256.8 h]; Cost |  |  |  |  | I08PA26019C0 | SW | C |  | R8 | PA | ME | 260 | 19 | BILL 9 | B09 | S2 | FF | R00 | ACF07 | 260 |  |  | MEP |  |  |  |  |  |  | FF |  |  |

| ID | WBS | Activity | Duration | Start | Finish | Predecessors | Complete | Remaining | Planned start | Planned finish | Total float | Free float | Resources | Cost | Actual cost | change id | CCAD BUILDING(SET) | CCAD PHASE(SET) | CCAD FLOOR(SET) | CCAD ZONE(SET) | CCAD WORK(SET) | CCAD SECTION(SET) | CCAD SERIAL No.(SET) | CCAD CBS(SET) | CCAD BILL(SET) | CCAD HANDOVER(SET) | CCAD TAG(SET) | CCAD REV(SET) | CCADACF (SET) | CCAD SSCF | user_number8 | user_integer1 | user_integer2 | user_number7 | P_811 | P_711 | U% | CCAD SUB ZONE MEP(SET) | CCAD MEQ | CCAD CSA | Act Selector % | Change Order # | NEW ACTIVITY ID | CCAD DIVISION(SET) |
| --- | --- | --- | --- | --- | --- | --- | --- | --- | --- | --- | --- | --- | --- | --- | --- | --- | --- | --- | --- | --- | --- | --- | --- | --- | --- | --- | --- | --- | --- | --- | --- | --- | --- | --- | --- | --- | --- | --- | --- | --- | --- | --- | --- | --- |
|  | 10 | **Precommissioning Tesing & snagging (Public Area)** |  | 2012-11-06 | 2012-12-30 |  |  |  |  |  |  |  |  |  |  |  |  |  |  |  |  |  |  |  |  |  |  |  |  |  |  |  |  |  |  |  |  |  |  |  |  |  |  |  |
| SR8TS01801C0 |  | SW-R8 ; MEP de-snag, FIREM sign-off | 12d | 2012-11-06 | 2012-11-21 | SR8PA40303C0, SR8PA27030C0, SR8PA26003C0, SR8PA26017C0, SR8PA23019C0, SR8PA21113C0, SR8PA26019C0 |  |  |  |  | 47.3d | 6.72d | TESTING & COMMISSIONING [1530 h]; Cost |  |  | SR8TS01801C0 | SW | C | R8 | TS | SC | 018 | 01 | BILL 9 | B09 | S2 | 01 | R00 | ACF07 | 018 |  |  |  |  |  |  |  |  |  |  |  |  |  |  |
| SR8TS01802C0 |  | SW-R8 ; Touch-up & Clean / JV inspection /CIR /De-snag | 18d | 2012-11-29 | 2012-12-22 | SR8PA05501C0, SR8PA08709C0, SR8PA09601C0, SR8PA09701C0, SR8PA09903C0, SR8PA09907C0, SR8PA11001C0, SR8PA11009C0, SR8TS01801C0, SR8CO04419C0, TAFT1505509C0, SR8PA09503C0, SR8CO04415C0 |  |  |  |  | 40.58d | 0d | TESTING & COMMISSIONING [255 h]; Cost |  |  | SR8TS01802C0 | SW | C | R8 | TS | SC | 018 | 02 | BILL 9 | B09 | S2 | 02 | R00 | ACF07 | 018 |  |  |  |  |  |  |  |  |  |  |  |  |  |  |
| SR8TS01805C0 |  | SW-R8 ; Consultant's final de-snag inspection | 7d | 2012-12-22 | 2012-12-30 | SR8TS01802C0 |  |  |  |  | 40.58d | 24.58d | Labor General [0.5 h]; Cost |  |  | SR8TS01803C0 | SW | C | R8 | TS | SC | 018 | 03 | BILL 9 | B09 | S2 | 03 | R00 | ACF07 | 018 |  |  |  |  |  |  |  |  |  |  |  |  |  |  |
|  | 04 | **Mech Room** |  | 2011-07-06 | 2012-12-25 |  |  |  |  |  |  |  |  |  |  |  |  |  |  |  |  |  |  |  |  |  |  |  |  |  |  |  |  |  |  |  |  |  |  |  |  |  |  |  |
| SR8M123013C0 |  | SW-R8 ; 2nd Fix, Inst of Equipment (AHU) (Mech RM) | 90d | 2011-07-06 A | 2012-02-20 | SR8M109201C0, SR8M122011C0 FF, SR8S107807C0, SR8S207807C0, SR8S307807C0 | 35% | 58.5d | 2011-09-13 | 2012-01-02 | 88.5d | 0d | MECHANICAL [13884 h]; Cost [3159394 AED] | 3,159,394.42 | 1,105,788.05 | I05ME23013C0 | SW | C | R8 | M1 | ME | 230 | 13 | BILL 9 | B09 | S2 | 2F | R00 | ACF04 | 230 | 0 | 0 | 0 | 0 | 35 | 30 | 35 | 2n | H | MEP |  |  |  |  |
| SR8M121111C0 |  | SW-R8 ; 1st Fix, Inst of Sprinkler main pipe (Mech RM) | 60d | 2011-08-10 A | 2011-11-17 | SR8M123001C0 | 70% | 18d | 2011-10-24 | 2012-01-09 | 183.5d | 0d | MECHANICAL [793.2 h]; Cost [43268 AED] | 43,267.97 | 30,287.58 | I05ME21111C0 | SW | C | R8 | M1 | ME | 211 | 11 | BILL 9 | B09 | S2 | 1F | R00 | ACF04 | 211 | 0 | 0 | 0 | 0 | 15 | 0 | 40 | 1S |  | MEP | M1F |  |  |  |
| SR8M121119C0 |  | SW-R8 ; 1st Fix, Inst of Sprinkler branch pipe (Mech RM) | 60d | 2011-08-10 A | 2011-11-17 | SR8M121111C0 SS | 70% | 18d | 2012-01-19 | 2012-03-31 | 267.5d | 90d | MECHANICAL [682.8 h]; Cost [37306.8 AED] | 37,306.8 | 26,114.76 | I05ME21119C0 | SW | C | R8 | M1 | ME | 211 | 19 | BILL 9 | B09 | S2 | 1F | R00 | ACF04 | 211 | 0 | 0 | 0 | 0 | 15 | 0 | 40 | 1S |  | MEP | M1F |  |  |  |
| SR8M122011C0 |  | SW-R8 ; 1st Fix, Inst of Drainage pipe (Mech RM) | 48d | 2011-09-05 A | 2011-12-20 | SR8M123001C0, SR8M126001C0 SS+14d | 10% | 43.2d | 2011-11-09 | 2012-01-07 | 139.8d | 0d | PLUMBING [310.8 h]; Cost [16770.4 AED] | 16,770.39 | 1,677.04 | I05ME22011C0 | SW | C | R8 | M1 | ME | 220 | 11 | BILL 9 | B09 | S2 | 1F | R00 | ACF04 | 220 |  |  |  |  |  |  |  | 1S |  | MEP | M1F |  |  |  |
| SR8M123001C0 |  | SW-R8 ; 1st Fix, Inst. of Supports for MEP (Mech RM) | 42d | 2011-09-05 A | 2011-10-24 | SR8S107807C0, SR8S207807C0, SR8S307807C0 | 50% | 21d | 2011-09-01 | 2011-10-19 | 88.5d | 0d | MECHANICAL [536.4 h]; Cost [30275.7 AED] | 30,275.67 | 15,137.83 | I05ME23001C0 | SW | C | R8 | M1 | ME | 230 | 01 | BILL 9 | B09 | S2 | 1F | R00 | ACF04 | 230 |  |  |  |  |  |  |  | 1S |  | MEP | M1F |  |  |  |
| SR8M126001C0 |  | SW-R8 ; 1st Fix, Inst of Trunking/Conduiting (Mech RM) | 48d | 2011-09-05 A | 2011-12-20 | SR8M123001C0 | 10% | 43.2d | 2011-10-20 | 2011-12-20 | 139.8d | 0d | ELECTRICAL [447.6 h]; Cost [24105.1 AED] | 24,105.11 | 2,410.51 | I05ME26001C0 | SW | C | R8 | M1 | ME | 260 | 01 | BILL 9 | B09 | S2 | 1F | R00 | ACF04 | 260 |  |  |  |  |  |  |  | 1S |  | MEP | M1F |  |  |  |
| SR8M126011C0 |  | SW-R8 ; 1st Fix, Inst of Cable Tray (Mech RM) | 48d | 2011-09-05 A | 2012-04-10 | SR8M123013C0 | 10% | 43.2d | 2012-02-15 | 2012-04-11 | 93.8d | 0d | ELECTRICAL [231.6 h]; Cost [13047.4 AED] | 13,047.37 | 1,304.74 | I05ME26011C0 | SW | C | R8 | M1 | ME | 260 | 11 | BILL 9 | B09 | S2 | 1F | R00 | ACF04 | 260 |  |  |  |  |  |  | 10 | 1S |  | MEP | M1F |  |  |  |
| SR8M127010C0 |  | SW-R8 ; 1st Fix, Inst of Trunking for ELV system (Mech RM) | 48d | 2011-09-05 A | 2012-04-12 | SR8M123005C0 | 10% | 43.2d | 2012-02-18 | 2012-04-12 | 92.3d | 0d | ELECTRICAL [991.2 h]; Cost [51056.8 AED] | 51,056.81 | 5,105.68 | I05ME27010C0 | SW | C | R8 | M1 | ME | 270 | 10 | BILL 9 | B09 | S2 | 1F | R00 | ACF04 | 270 |  |  |  |  |  |  |  | 1S |  | MEP | M1F |  |  |  |
| SR8M109201C0 |  | SW-R8 ; Metal Studs (Mech RM) | 36d | 2011-10-25 | 2011-12-11 | SR8M123001C0 |  |  |  |  | 88.5d | 0d | PARTITIONS [2367 h]; PARTITIONS - Metal Studs [730 m]; Cost |  |  | I05ME09201C0 | SW | C | R8 | M1 | PT | 092 | 01 | BILL 9 | B09 | S2 | 1F | R00 | ACF06 | 092 |  |  |  |  |  |  |  |  |  | GP | PMS |  |  |  |
| SR8M122006C0 |  | SW-R8 ; 1st Fix, Inst of Water supply pipe (Mech RM) | 54d | 2011-10-25 | 2012-01-02 | SR8M122011C0 SS+12d, SR8M123001C0 |  |  |  |  | 195.5d | 18d | PLUMBING [1688.4 h]; Cost |  |  | I05ME22006C0 | SW | C | R8 | M1 | ME | 220 | 06 | BILL 9 | B09 | S2 | 1F | R00 | ACF04 | 220 |  |  |  |  |  |  |  | 1S |  | MEP | M1F |  |  |  |
| SR8M123019C0 |  | SW-R8 ; 1st Fix, Inst of CHW pipe (Mech RM) | 54d | 2011-10-25 | 2012-01-02 | SR8M121111C0 SS+12d, SR8M123001C0 |  |  |  |  | 183.5d | 40.5d | MECHANICAL [1687.2 h]; Cost |  |  | I05ME23019C0 | SW | C | R8 | M1 | ME | 230 | 19 | BILL 9 | B09 | S2 | 1F | R00 | ACF04 | 230 |  |  |  |  |  |  |  | 1S |  | MEP | M1F |  |  |  |
| SR8M108101C0 |  | SW-R8 ; Metal Door Frames (Mech RM) | 18d | 2011-12-12 | 2012-01-02 | SR8M109201C0, GNHE08101C0 FS+69d |  |  |  |  | 231.5d | 54d | METAL DOORS [18 h]; Cost |  |  | I05ME08101C0 | SW | C | R8 | M1 | DO | 081 | 01 | BILL 9 | B09 | S2 | DF | R00 | ACF06 | 081 |  |  |  |  |  |  |  |  |  |  |  | 316 | 1465 | 08 |
| SR8M109203C0 |  | SW-R8 ; Partitions 1st face (Mech RM) | 36d | 2011-12-12 | 2012-01-23 | SR8M109201C0 |  |  |  |  | 177.5d | 0d | PARTITIONS [730 m]; PARTITIONS [822 h]; Cost |  |  | I05ME09203C0 | SW | C | R8 | M1 | PT | 092 | 03 | BILL 9 | B09 | S2 | 2F | R00 | ACF06 | 092 |  |  |  |  |  |  |  |  |  | GP | P1F | 314 | 1463 |  |
| SR8M123005C0 |  | SW-R8 ; 1st Fix, Inst of Ducting (Mech RM) | 60d | 2011-12-12 | 2012-02-21 | SR8M123001C0, SR8M123013C0 SS+12d |  |  |  |  | 92.3d | 0d | MECHANICAL [6650.4 h]; Cost |  |  | I05ME23005C0 | SW | C | R8 | M1 | ME | 230 | 05 | BILL 9 | B09 | S2 | 1F | R00 | ACF04 | 230 |  |  |  |  |  |  |  | 1S |  | MEP | M1F |  |  |  |
| SR8M109205C0 |  | SW-R8 ; Partitions Closing (Mech RM) | 36d | 2012-01-24 | 2012-03-06 | SAFOA09212C1 FF, SR8M109201C0, SR8M109203C0, SR8M122006C0, SR8M122011C0, SR8M108101C0 FF |  |  |  |  | 177.5d | 0d | PARTITIONS [730 m]; PARTITIONS [1302 h]; Cost |  |  | I05ME09205C0 | SW | C | R8 | M1 | PT | 092 | 05 | BILL 9 | B09 | S2 | FF | R00 | ACF06 | 092 |  |  |  |  |  |  |  |  |  | GP | P2F | 315 | 1464 |  |
| SR8M121117C0 |  | SW-R8 ; 2nd Fix, Inst of Zone Control Valve (Mech RM) | 42d | 2012-02-20 | 2012-04-09 | SR8M123013C0, SR8M123019C0 |  |  |  |  | 143d | 50.7d | MECHANICAL [604.8 h]; Cost |  |  | I05ME21117C0 | SW | C | R8 | M1 | ME | 211 | 17 | BILL 9 | B09 | S2 | 2F | R00 | ACF07 | 211 |  |  |  |  |  |  |  | 2n |  | MEP |  |  |  |  |
| SR8M123011C0 |  | SW-R8 ; 2nd Fix, Inst of Equipment (FCU,FAN,PUMP) (Mech RM) | 54d | 2012-02-20 | 2012-04-23 | SR8M123013C0 |  |  |  |  | 88.5d | 0d | MECHANICAL [3559.2 h]; Cost |  |  | I05ME23011C0 | SW | C | R8 | M1 | ME | 230 | 11 | BILL 9 | B09 | S2 | 2F | R00 | ACF04 | 230 |  |  |  |  |  |  |  | 2n | H | MEP |  |  |  |  |
| SR8M126009C0 |  | SW-R8 ; 2nd Fix, Inst of Equipment (DB,SG) (Mech RM) | 54d | 2012-02-20 | 2012-04-23 | SR8M123013C0 |  |  |  |  | 131d | 38.7d | ELECTRICAL [1345.2 h]; Cost |  |  | I05ME26009C0 | SW | C | R8 | M1 | ME | 260 | 09 | BILL 9 | B09 | S2 | 2F | R00 | ACF04 | 260 |  |  |  |  |  |  |  | 2n | E | MEP |  |  |  |  |
| SR8M127020C0 |  | SW-R8 ; 2nd Fix, Inst of ELV Equipment (Panels) (Mech RM) | 54d | 2012-02-20 | 2012-04-23 | SR8M123013C0 |  |  |  |  | 131d | 38.7d | ELECTRICAL [1868.4 h]; Cost |  |  | I05ME27020C0 | SW | C | R8 | M1 | ME | 270 | 20 | BILL 9 | B09 | S2 | 2F | R00 | ACF04 | 270 |  |  |  |  |  |  |  | 2n | E | MEP |  |  |  |  |
| SR8M123015C0 |  | SW-R8 ; 2nd Fix, Inst of VCD's/FD's (Mech RM) | 42d | 2012-02-22 | 2012-04-10 | SR8M123005C0 |  |  |  |  | 141.5d | 6d | MECHANICAL [1111.2 h]; Cost |  |  | I05ME23015C0 | SW | C | R8 | M1 | ME | 230 | 15 | BILL 9 | B09 | S2 | 2F | R00 | ACF07 | 230 |  |  |  |  |  |  |  | 2n |  | MEP |  |  |  |  |
| SR8M123017C0 |  | SW-R8 ; 2nd Fix, Insulation of CHW pipe & Duct (Mech RM) | 48d | 2012-02-22 | 2012-04-17 | SR8M123005C0, SR8M123019C0 |  |  |  |  | 147.5d | 0d | MECHANICAL [3716.4 h]; Cost |  |  | I05ME23017C0 | SW | C | R8 | M1 | ME | 230 | 17 | BILL 9 | B09 | S2 | 2F | R00 | ACF07 | 230 |  |  |  |  |  |  |  | 2n |  | MEP |  |  |  |  |
| SR8M109601C0 |  | SW-R8 ; Floor Finishes (Mech RM) | 28d | 2012-03-07 | 2012-04-08 | SR8M109205C0 |  |  |  |  | 203.5d | 0d | ASSORTED FLOOR FINISH [6232 h]; ASSORTED FLOOR FINISH [3458 m2]; Cost |  |  | I05ME09601C0 | SW | C | R8 | M1 | FF | 096 | 01 | BILL 9 | B09 | S2 | 01 | R00 | ACF06 | FF |  |  |  |  |  |  |  |  |  |  |  | 326 | 1501 |  |
| SR8M109901C0 |  | SW-R8 ; Wall Prime & 1st coat (Mech RM) | 24d | 2012-03-07 | 2012-04-03 | SR8M109205C0 |  |  |  |  | 189.5d | 0d | WALL PAINT [569 h]; WALL PAINT [709 m2]; Cost |  |  | I05ME09901C0 | SW | C | R8 | M1 | PA | 099 | 01 | BILL 9 | B09 | S2 | 01 | R00 | ACF06 | 099 |  |  |  |  |  |  |  |  |  |  |  | 328 | 1469 |  |
| SR8M121115C0 |  | SW-R8 ; 2nd Fix, Inst of Sprinkler droppers (Mech RM) | 42d | 2012-03-07 | 2012-04-24 | SR8M109205C0, SR8M121119C0 |  |  |  |  | 177.5d | 0d | MECHANICAL [1309.2 h]; Cost |  |  | I05ME21115C0 | SW | C | R8 | M1 | ME | 211 | 15 | BILL 9 | B09 | S2 | 2F | R00 | ACF07 | 211 |  |  |  |  |  |  |  | 2n |  | MEP |  |  |  |  |
| SR8M121123C0 |  | SW-R8 ; Final Fix, Inst of Fire Extinguishers/FHC (Mech RM) | 36d | 2012-03-07 | 2012-04-17 | SR8M109205C0 |  |  |  |  | 219.5d | 127.2d | MECHANICAL [2241.6 h]; Cost |  |  | I05ME21123C0 | SW | C | R8 | M1 | ME | 211 | 23 | BILL 9 | B09 | S2 | FF | R00 | ACF07 | 211 |  |  |  |  |  |  |  | FF |  | MEP |  |  |  |  |
| SR8M126015C0 |  | SW-R8 ; Final Fix, Inst of Ceiling rose (Mech RM) | 36d | 2012-03-07 | 2012-04-17 | SR8M109205C0 |  |  |  |  | 219.5d | 127.2d | ELECTRICAL [36 h]; Cost |  |  | I05ME26015C0 | SW | C | R8 | M1 | ME | 260 | 15 | BILL 9 | B09 | S2 | FF | R00 | ACF07 | 260 |  |  |  |  |  |  |  | FF |  | MEP |  |  |  |  |
| SR8M109903C0 |  | SW-R8 ; Wall - Final Paint (Mech RM) | 24d | 2012-04-04 | 2012-05-01 | SR8M109901C0 |  |  |  |  | 195.5d | 0d | WALL PAINT [306 h]; WALL PAINT [382 m2]; Cost |  |  | I05ME09903C0 | SW | C | R8 | M1 | PA | 099 | 03 | BILL 9 | B09 | S2 | 02 | R00 | ACF06 | 099 |  |  |  |  |  |  |  |  |  |  |  | 329 | 1470 |  |
| SR8M126019C0 |  | SW-R8 ; Final Fix, Inst of Light fittings (Mech RM) | 42d | 2012-04-04 | 2012-05-22 | SR8M109901C0 |  |  |  |  | 189.5d | 97.2d | ELECTRICAL [4813.2 h]; Cost |  |  | I05ME26019C0 | SW | C | R8 | M1 | ME | 260 | 19 | BILL 9 | B09 | S2 | FF | R00 | ACF07 | 260 |  |  |  |  |  |  |  | FF |  | MEP |  |  |  |  |
| SR8M108105C0 |  | SW-R8 ; Metal Doors (Mech RM) | 16d | 2012-04-09 | 2012-04-26 | SR8M108101C0, SR8M109601C0, SR8M109901C0 |  |  |  |  | 203.5d | 0d | METAL DOORS [140 h]; METAL DOORS [14 no]; Cost |  |  | I05ME08105C0 | SW | C | R8 | M1 | DO | 081 | 05 | BILL 9 | B09 | S2 | DR | R00 | ACF06 | 081 |  |  |  |  |  |  |  |  |  |  |  | 317 | 1466 | 08 |
| SR8M122003C0 |  | SW-R8 ; Final Fix, Inst of All drain (Mech RM) | 18d | 2012-04-09 | 2012-04-29 | SR8M109601C0 |  |  |  |  | 209.5d | 117.2d | PLUMBING [310.8 h]; Cost |  |  | I05ME22003C0 | SW | C | R8 | M1 | ME | 220 | 03 | BILL 9 | B09 | S2 | FF | R00 | ACF07 | 220 |  |  |  |  |  |  |  | FF |  | MEP |  |  |  |  |
| SR8M126007C0 |  | SW-R8 ; 2nd Fix, Cable Pulling (Mech RM) | 42d | 2012-04-10 | 2012-05-29 | SR8M126011C0 |  |  |  |  | 105.8d | 7.5d | ELECTRICAL [1532.4 h]; Cost |  |  | I05ME26007C0 | SW | C | R8 | M1 | ME | 260 | 07 | BILL 9 | B09 | S2 | 2F | R00 | ACF07 | 260 |  |  |  |  |  |  |  | 2n |  | MEP |  |  |  |  |
| SR8M127001C0 |  | SW-R8 ; 1st Fix, Wiring/ Cabling work (Mech RM) | 48d | 2012-04-12 | 2012-06-07 | SR8M126001C0, SR8M126011C0, SR8M127010C0 |  |  |  |  | 92.3d | 0d | ELECTRICAL [241.2 h]; Cost |  |  | I05ME27001C0 | SW | C | R8 | M1 | ME | 270 | 01 | BILL 9 | B09 | S2 | 1F | R00 | ACF04 | 270 |  |  |  |  |  |  |  | 1S |  | MEP | M1F |  |  |  |
| SR8M123023C0 |  | SW-R8 ; Final Fix, Inst of Flexible Duct & Plenum boxes (Mech RM) | 36d | 2012-04-18 | 2012-05-29 | SR8M123015C0, SR8M123017C0 |  |  |  |  | 147.5d | 0d | MECHANICAL [166.8 h]; Cost |  |  | I05ME23023C0 | SW | C | R8 | M1 | ME | 230 | 23 | BILL 9 | B09 | S2 | FF | R00 | ACF07 | 230 |  |  |  |  |  |  |  | FF |  | MEP |  |  |  |  |
| SR8M123009C0 |  | SW-R8 ; 2nd Fix, Inst of VAV'S CHW connection (Mech RM) | 42d | 2012-04-23 | 2012-06-11 | SR8M123011C0 |  |  |  |  | 137d | 44.7d | MECHANICAL [1018.8 h]; Cost |  |  | I05ME23009C0 | SW | C | R8 | M1 | ME | 230 | 09 | BILL 9 | B09 | S2 | 2F | R00 | ACF07 | 230 |  |  |  |  |  |  |  | 2n |  | MEP |  |  |  |  |
| SR8M121121C0 |  | SW-R8 ; Final Fix, Inst of Sprinklers head (Mech RM) | 36d | 2012-04-25 | 2012-06-05 | SR8M121115C0 |  |  |  |  | 177.5d | 85.2d | MECHANICAL [237.6 h]; Cost |  |  | I05ME21121C0 | SW | C | R8 | M1 | ME | 211 | 21 | BILL 9 | B09 | S2 | FF | R00 | ACF07 | 211 |  |  |  |  |  |  |  | FF |  | MEP |  |  |  |  |
| SR8M108709C0 |  | SW-R8 ; Ironmongery (Mech RM) | 20d | 2012-04-28 | 2012-05-20 | SR8M108105C0 |  |  |  |  | 203.5d | 159.42d | IRONMONGERY [290 h]; IRONMONGERY [29 no]; Cost |  |  | I05ME08709C0 | SW | C | R8 | M1 | DO | 087 | 09 | BILL 9 | B09 | S2 | IM | R00 | ACF06 | 087 |  |  |  |  |  |  |  |  |  |  |  | 322 | 1467 | 08 |
| SR8M126017C0 |  | SW-R8 ; Final Fix, Inst of Switch/Sockets (Mech RM) | 12d | 2012-05-02 | 2012-05-15 | SR8M109901C0, SR8M109903C0 |  |  |  |  | 195.5d | 103.2d | ELECTRICAL [256.8 h]; Cost |  |  | I05ME26017C0 | SW | C | R8 | M1 | ME | 260 | 17 | BILL 9 | B09 | S2 | FF | R00 | ACF07 | 260 |  |  |  |  |  |  |  | FF |  | MEP |  |  |  |  |
| SR8M123021C0 |  | SW-R8 ; Final Fix, Inst of Grilles & Diffusers (Mech RM) | 36d | 2012-05-30 | 2012-07-11 | SR8M123023C0 |  |  |  |  | 147.5d | 55.2d | MECHANICAL [835.2 h]; Cost |  |  | I05ME23021C0 | SW | C | R8 | M1 | ME | 230 | 21 | BILL 9 | B09 | S2 | FF | R00 | ACF07 | 230 |  |  |  |  |  |  |  | FF |  | MEP |  |  |  |  |
| SR8M126005C0 |  | SW-R8 ; 2nd Fix, Wiring for Power/Lighting/Emergency (Mech RM) | 42d | 2012-06-07 | 2012-07-28 | SR8M126001C0, SR8M126007C0, SR8M126011C0, SR8M127001C0, SR8M127010C0 |  |  |  |  | 98.3d | 0d | ELECTRICAL [241.2 h]; Cost |  |  | I05ME26005C0 | SW | C | R8 | M1 | ME | 260 | 05 | BILL 9 | B09 | S2 | 2F | R00 | ACF07 | 260 |  |  |  |  |  |  |  | 2n |  | MEP |  |  |  |  |
| SR8M127003C0 |  | SW-R8 ; Final Fix, BMS connection work to Equipment (Mech RM) | 48d | 2012-06-07 | 2012-08-04 | SR8M121117C0, SR8M123011C0, SR8M123013C0, SR8M123015C0, SR8M126009C0, SR8M127001C0, SR8M127020C0 |  |  |  |  | 92.3d | 0d | ELECTRICAL [13516.8 h]; Cost |  |  | I05ME27003C0 | SW | C | R8 | M1 | ME | 270 | 03 | BILL 9 | B09 | S2 | FF | R00 | ACF07 | 270 |  |  |  |  |  |  |  | FF |  | MEP |  |  |  |  |
| SR8M126013C0 |  | SW-R8 ; Final Fix, Termination & Gladding of Cables (Mech RM) | 36d | 2012-07-28 | 2012-09-10 | SR8M109205C0, SR8M126005C0 |  |  |  |  | 98.3d | 6d | ELECTRICAL [85.2 h]; Cost |  |  | I05ME26013C0 | SW | C | R8 | M1 | ME | 260 | 13 | BILL 9 | B09 | S2 | FF | R00 | ACF07 | 260 |  |  |  |  |  |  |  | FF |  | MEP |  |  |  |  |
| SR8M127030C0 |  | SW-R8 ; Final Fix, Inst of ELV device (Detector/Speaker) (Mech RM) | 36d | 2012-08-04 | 2012-09-17 | SR8M109901C0, SR8M123009C0, SR8M127020C0, SR8M127003C0 |  |  |  |  | 92.3d | 0d | ELECTRICAL [1348.8 h]; Cost |  |  | I05ME27030C0 | SW | C | R8 | M1 | ME | 270 | 30 | BILL 9 | B09 | S2 | FF | R00 | ACF07 | 270 |  |  |  |  |  |  |  | FF |  | MEP |  |  |  |  |

| ID | WBS | Activity | Duration | Start | Finish | Predecessors | Complete | Remaining | Planned start | Planned finish | Total float | Free float | Resources | Cost | Actual cost | change id | CCAD BUILDING(SET) | CCAD PHASE(SET) | CCAD FLOOR(SET) | CCAD ZONE(SET) | CCAD WORK(SET) | CCAD SECTION(SET) | CCAD SERIAL No.(SET) | CCAD CBS(SET) | CCAD BILL(SET) | CCAD HANDOVER(SET) | CCAD TAG(SET) | CCAD REV(SET) | CCADACF (SET) | CCAD SSCF | Change Order # | NEW ACTIVITY ID | P_811 | P_711 | CCAD DIVISION(SET) | CCAD CSA | Phase | Area/ Department | Grids | Are | Weight & Nos | Process | Levels | U% | RENZ % COMPLETE | July2011 Target% Complete | CCAD SUB ZONE MEP(SET) | user_number8 | user_integer1 | user_integer2 | user_number7 |
| --- | --- | --- | --- | --- | --- | --- | --- | --- | --- | --- | --- | --- | --- | --- | --- | --- | --- | --- | --- | --- | --- | --- | --- | --- | --- | --- | --- | --- | --- | --- | --- | --- | --- | --- | --- | --- | --- | --- | --- | --- | --- | --- | --- | --- | --- | --- | --- | --- | --- | --- | --- |
|  | 10 | **Precommissioning Tesing & snagging (Mech Room)** |  | 2012-09-17 | 2012-12-25 |  |  |  |  |  |  |  |  |  |  |  |  |  |  |  |  |  |  |  |  |  |  |  |  |  |  |  |  |  |  |  |  |  |  |  |  |  |  |  |  |  |  |  |  |  |  |
| SR8TS01811C0 |  | SW-R8 ; MEP de-snag, FIREM sign-off | 12d | 2012-09-17 | 2012-10-01 | SR8M121123C0, SR8M126015C0, SR8M126017C0, SR8M126019C0, SR8M122003C0, SR8M123023C0, SR8M127030C0, SR8M127003C0, SR8M121121C0, SR8M123021C0, SR8M126013C0 |  |  |  |  | 92.3d | 48.22d | TESTING & COMMISSIONING [510 h]; Cost |  |  | SR8TS01801C0 | SW | C | R8 | TS | SC | 018 | 01 | BILL 9 | B09 | S2 | 01 | R00 | ACF07 | 018 |  |  |  |  |  |  |  |  |  |  |  |  |  |  |  |  |  |  |  |  |  |
| SR8TS01804C0 |  | SW-R8 ; Touch-up & Clean / JV inspection /CIR /De-snag | 16.35d | 2012-11-29 | 2012-12-19 | SR8M108709C0, SR8M109601C0, SR8M109903C0, SR8TS01811C0, SR8CO04405C0 |  |  |  |  | 44.08d | 0d | TESTING & COMMISSIONING [128 h]; Cost |  |  | SR8TS01802C0 | SW | C | R8 | TS | SC | 018 | 02 | BILL 9 | B09 | S2 | 02 | R00 | ACF07 | 018 |  |  |  |  |  |  |  |  |  |  |  |  |  |  |  |  |  |  |  |  |  |
| SR8TS01806C0 |  | SW-R8 ; Consultant's final de-snag inspection | 5.15d | 2012-12-19 | 2012-12-25 | SR8TS01804C0 |  |  |  |  | 44.08d | 28.08d | Labor General [1 h]; Cost |  |  | SR8TS01803C0 | SW | C | R8 | TS | SC | 018 | 03 | BILL 9 | B09 | S2 | 03 | R00 | ACF07 | 018 |  |  |  |  |  |  |  |  |  |  |  |  |  |  |  |  |  |  |  |  |  |
|  | 05 | **BMU** |  | 2011-07-10 | 2012-02-20 |  |  |  |  |  |  |  |  |  |  |  |  |  |  |  |  |  |  |  |  |  |  |  |  |  |  |  |  |  |  |  |  |  |  |  |  |  |  |  |  |  |  |  |  |  |  |
| SR8BM03301C0 |  | SW-R8 ; Concrete Plinth (BMU-A3) | 18d | 2011-07-10 A | 2011-08-30 A | SR8S103399C0, SR8S203399C0, SR8S303399C0 | 100% |  | 2011-06-30 | 2011-07-21 |  |  | CONCRETE [10624 h]; CONCRETE [267 m3]; Cost |  |  | SR8BM03301C0 | SW | C | R8 | BM | CT | 033 | 01 | BILL 9 | B09 | S2 | 10 | R00 | ACF03 | 033 | 302 | 335 | 100 | 30 | 03 |  |  |  |  |  |  |  |  |  |  |  |  |  |  |  |  |
| SR8BM05501C0 |  | SW-R8 ; Steel Tracking (BMU-A3) | 24d | 2011-09-05 A | 2011-10-25 | SR8BM03301C0 | 10% | 21.6d | 2011-09-01 | 2011-09-28 | 265.4d | 0d | SECONDARY STEEL [874 h]; Cost |  |  | SR8BM05501C0 | SW | C | R8 | BM | BMU | 055 | 01 | BILL 9 | B09 | S2 | BMU | R00 | ACF03 | BMU | 302 | 335 |  |  | 03 | BMU |  |  |  |  |  |  |  |  |  |  |  |  |  |  |  |
| S05BM033B2C0 |  | SW-05 ; Brackets Installation (BMU-B4) | 24d | 2011-10-01 | 2011-10-27 | S05S105103C0, S05S205103C0 |  |  |  |  | 367d | 0d | Labor General [0.5 h]; Cost |  |  | T21BM03301C0 | SW | C | 05 | BM | BMU | 055 | 01 | BILL 10 | B09 | S2 | BMU | R00 | ACF03 | BMU | 302 | 335 |  |  | 03 | BMU |  |  |  |  |  |  |  |  |  |  |  |  |  |  |  |
| SR8BM11001C0 |  | SW-R8 ; BMU Machine (BMU-A3) | 12d | 2011-10-25 | 2011-11-12 | SR8BM05501C0, SR8S307807C0 |  |  |  |  | 265.4d | 198.1d | MECHANICAL [10831 h]; Cost |  |  | SR8BM11001C0 | SW | C | R8 | BM | BMU | 110 | 01 | BILL 9 | B09 | S2 | BMU | R00 |  | BMU | 302 | 335 |  |  | 03 | BMU |  |  |  |  |  |  |  |  |  |  |  |  |  |  |  |
| S05BM055B2C0 |  | SW-05 ; Steel Tracking (BMU-B4) | 56d | 2011-10-29 | 2012-01-08 | OGNMU00053S0, S05BM033B2C0 |  |  |  |  | 367d | 0d | Labor General [0.5 h]; Cost |  |  | T21BM05501C0 | SW | C | 05 | BM | BMU | 055 | 01 | BILL 10 | B09 | S2 | BMU | R00 | ACF03 | BMU | 302 | 335 |  |  | 03 | BMU |  |  |  |  |  |  |  |  |  |  |  |  |  |  |  |
| S05BM110B2C0 |  | SW-05 ; BMU Machine (BMU-B4) | 36d | 2012-01-09 | 2012-02-20 | S05BM055B2C0 |  |  |  |  | 367d | 27.7d | Labor General [0.5 h]; Cost |  |  | T21BM11001C0 | SW | C | 05 | BM | BMU | 110 | 01 | BILL 10 | B09 | S2 | BMU | R00 |  | BMU | 302 | 335 |  |  | 03 | BMU |  |  |  |  |  |  |  |  |  |  |  |  |  |  |  |
|  | 06 | **Heli Port** |  | 2012-03-07 | 2012-07-05 |  |  |  |  |  |  |  |  |  |  |  |  |  |  |  |  |  |  |  |  |  |  |  |  |  |  |  |  |  |  |  |  |  |  |  |  |  |  |  |  |  |  |  |  |  |  |
| SR8HP05307C0 |  | SW-R8 ; Steel Post / Framing (Heliport) | 60d | 2012-03-07 | 2012-05-16 | SR8RF09601C0, SR8S103399C0, SR8S203399C0, SR8S303399C0 |  |  |  |  | 67.3d | 0d | SECONDARY STEEL [6144 h]; Cost |  |  | SR8HP05307C0 | SW | C | R8 | HP | SW | 053 | 07 | BILL 9 | B09 | S2 | 05 | R00 | ACF03 | 053 |  |  |  |  |  | MEP | Z2 | SW | 5TH | C | A8B | MDEC | 6FLR |  |  |  |  |  |  |  |  |
| SR8HP05309C0 |  | SW-R8 ; AL Decking / Sloping Walk (Heliport) | 42d | 2012-05-16 | 2012-07-05 | SR8HP05307C0 |  |  |  |  | 67.3d | 0d | SECONDARY STEEL [683 h]; Cost |  |  | SR8HP05309C0 | SW | C | R8 | HP | SW | 053 | 09 | BILL 9 | B09 | S2 | 05 | R00 | ACF03 | 053 |  |  |  |  |  | MEP | Z2 | SW | 5TH | C | A8B | MDEC | 6FLR |  |  |  |  |  |  |  |  |
| SR8HP09601C0 |  | SW-R8 ; Finishes( Marking . etc ) (Heliport) | 0d | 2012-07-05 | 2012-07-05 | SR8HP05309C0 |  |  |  |  | 251.3d | 248.43d | Cost |  |  | SR8HP09601C0 | SW | C | R8 | HP | FF | 096 | 01 | BILL 9 | B09 | S2 | 10 | R00 | ACF06 | FF |  |  |  |  |  |  | Z2 | SW | 5TH | C | A8B | MDEC | 6FLR |  |  |  |  |  |  |  |  |
|  | EX | **External** |  | 2011-08-08 | 2012-06-30 |  |  |  |  |  |  |  |  |  |  |  |  |  |  |  |  |  |  |  |  |  |  |  |  |  |  |  |  |  |  |  |  |  |  |  |  |  |  |  |  |  |  |  |  |  |  |
|  | 01 | **Structure & Envelopment** |  | 2011-08-08 | 2012-06-30 |  |  |  |  |  |  |  |  |  |  |  |  |  |  |  |  |  |  |  |  |  |  |  |  |  |  |  |  |  |  |  |  |  |  |  |  |  |  |  |  |  |  |  |  |  |  |
| SEXCO04403C0 |  | SW-EX ; Diamond Tube Steel (Common Zone) | 95d | 2011-08-08 A | 2012-02-15 | S06CO04406C0 | 10% | 85.5d | 2011-10-20 | 2012-02-16 | 40.58d | 0d | FACADE DIAMOND GLASS [35163.8 h]; Cost |  |  | SEXCO04403C0 | SW | C | EX | CO | FA | 044 | 03 | BILL 9 | B09 | S2 | FDG | R00 | ACF05 | 044 |  |  | 10 | 0 |  | FA |  |  |  |  |  |  |  | 10 |  |  |  |  |  |  |  |
| SEXCO04405C0 |  | SW-EX ; Diamond Glass (Common Zone) | 95d | 2012-03-10 | 2012-06-30 | SEXCO04403C0 FS+20d, S08CO04415C0 FF, SAF8203301R02 FF |  |  |  |  | 40.58d | 0d | FACADE CURTAIN WALL 2 [19274.7 h]; FACADE METAL PANEL 2 [4103.7 h]; FACADE CURTAIN WALL 2 [7045 m2]; FACADE METAL PANEL 2 [1500 m2]; FACADE TOTAL QUANTITY m2 [8545 m2]; Cost |  |  | SEXCO04405C0 | SW | C | EX | CO | FA | 044 | 05 | BILL 9 | B09 | S2 | FDG | R00 | ACF05 | 044 |  |  |  |  |  | FA |  |  |  |  |  |  |  |  |  |  |  |  |  |  |  |
|  | AF | **MEP Risers** |  | 2011-05-10 | 2012-02-14 |  |  |  |  |  |  |  |  |  |  |  |  |  |  |  |  |  |  |  |  |  |  |  |  |  |  |  |  |  |  |  |  |  |  |  |  |  |  |  |  |  |  |  |  |  |  |
|  | 02 | **MEP Risers** |  | 2011-05-10 | 2011-12-31 |  |  |  |  |  |  |  |  |  |  |  |  |  |  |  |  |  |  |  |  |  |  |  |  |  |  |  |  |  |  |  |  |  |  |  |  |  |  |  |  |  |  |  |  |  |  |
| SAFAF23027C0 |  | SW-AF ; Risers-Secondary Steel for Chilled water & heat recovery pip (All Floor) | 17d | 2011-05-10 A | 2011-10-08 | CAFAF23027C0, DAFAF23027C0, SR8S105101C0, SR8S205101C0, SR8S305101C0 | 60% | 6.8d | 2011-06-08 | 2011-06-29 | 123.55d | 0d | Labor General [172.8 h]; Cost [235552 AED] | 235,552.2 | 141,331.32 | SAFAF23027C0 | SW | C | AF | AF | ME | 230 | 27 | BILL 11 | B09 | S2 | RI | R00 | ACF04 | 230 | 1128 | 230 | 60 | 50 |  | MEP |  |  |  |  |  |  |  |  | 50 | 65 | RI |  |  |  |  |
| SAFAF22007C0 |  | SW-AF ; Risers-Secondary Steel for Hot water risers (All Floor) | 16.88d | 2011-05-11 A | 2011-10-19 | CAFAF22007C0, DAFAF22007C0, SR8S105101C0, SR8S205101C0, SR8S305101C0 | 5% | 16.03d | 2011-06-11 | 2011-06-30 | 88.22d | 0d | Labor General [172.8 h]; Cost [3355.75 AED] | 3,355.75 | 167.79 | SAFAF22007C0 | SW | C | AF | AF | ME | 220 | 07 | BILL 11 | B09 | S2 | RI | R00 | ACF04 | 220 | 1123 | 225 |  |  |  | MEP |  |  |  |  |  |  |  |  | 5 | 25 | RI |  |  |  |  |
| SAFAF23025C0 |  | SW-AF ; Risers-Secondary Steel for Main Ducts (All Floor) | 16.88d | 2011-05-11 A | 2011-10-10 | CAFAF23025C0, SR8S105101C0, SR8S205101C0, SR8S305101C0 | 50% | 8.44d | 2011-06-11 | 2011-06-30 | 134.21d | 0d | Labor General [172.8 h]; Cost [133090 AED] | 133,090 | 66,545 | SAFAF23025C0 | SW | C | AF | AF | ME | 230 | 25 | BILL 11 | B09 | S2 | RI | R00 | ACF04 | 230 | 1127 | 229 | 50 | 5 |  | MEP |  |  |  |  |  |  |  |  | 5 | 25 | RI |  |  |  |  |
| SAFAF21103C0 |  | SW-AF ; Risers-Fire Suppression risers (All Floor) | 60d | 2011-05-15 A | 2011-10-26 | SAFAF21101C0 | 65% | 21d | 2011-08-15 | 2011-10-26 | 126.55d | 50.33d | MECHANICAL [12632.4 h]; Cost [652249 AED] | 652,249.44 | 423,962.14 | SAFAF21103C0 | SW | C | AF | AF | ME | 211 | 03 | BILL 11 | B09 | S2 | RI | R00 | ACF04 | 211 | 1121 | 1514 | 65 | 25 |  | MEP |  |  |  |  |  |  |  |  | 5 | 25 | RI |  |  |  |  |
| SAFAF22019C0 |  | SW-AF ; Risers-Domestic cold water risers (All Floor) | 59.88d | 2011-05-15 A | 2011-12-31 | SAFAF22005C0 | 5% | 56.88d | 2011-08-24 | 2011-11-03 | 76.22d | 0d | PLUMBING [1099.2 h]; Cost [56789.2 AED] | 56,789.25 | 2,839.46 | SAFAF22019C0 | SW | C | AF | AF | ME | 220 | 19 | BILL 11 | B09 | S2 | RI | R00 | ACF04 | 220 | 1122 | 1515 |  |  |  | MEP |  |  |  |  |  |  |  |  | 5 | 25 | RI |  |  |  |  |
| SAFAF22021C0 |  | SW-AF ; Risers-Hot water risers (All Floor) | 60d | 2011-05-15 A | 2011-12-17 | SAFAF22007C0 | 25% | 45d | 2011-09-04 | 2011-11-16 | 88.22d | 0d | PLUMBING [1130.4 h]; Cost [58390.1 AED] | 58,390.05 | 14,597.51 | SAFAF22021C0 | SW | C | AF | AF | ME | 220 | 21 | BILL 11 | B09 | S2 | RI | R00 | ACF04 | 220 | 1123 | 1516 |  |  |  | MEP |  |  |  |  |  |  |  |  | 25 | 25 | RI |  |  |  |  |
| SAFAF22023C0 |  | SW-AF ; Risers-Soil, waste & vent risers (All Floor) | 59.88d | 2011-05-15 A | 2011-10-25 | SAFAF22011C0 | 75% | 14.97d | 2011-08-24 | 2011-11-03 | 127.48d | 14.23d | PLUMBING [12427.2 h]; Cost [642347 AED] | 642,347.1 | 481,760.32 | SAFAF22023C0 | SW | C | AF | AF | ME | 220 | 23 | BILL 11 | B09 | S2 | RI | R00 | ACF04 | 220 | 1125 | 1518 | 70 | 45 |  | MEP |  |  |  |  |  |  |  | 70 | 5 | 5 | RI | 0 | 0 | 0 | 0 |
| SAFAF23029C0 |  | SW-AF ; Risers-Chilled water & heat recovery pip (All Floor) | 54d | 2011-05-15 A | 2011-10-30 | SAFAF23027C0 | 65% | 18.9d | 2011-09-07 | 2011-11-13 | 123.55d | 47.33d | MECHANICAL [79370.4 h]; Cost [4098608 AED] | 4,098,608.28 | 2,664,095.38 | SAFAF23029C0 | SW | C | AF | AF | ME | 230 | 29 | BILL 11 | B09 | S2 | RI | R00 | ACF04 | 230 | 1128 | 1521 |  |  |  | MEP |  |  |  |  |  |  |  | 55 | 50 | 50 | RI | 0 | 0 | 0 | 0 |
| SAFAF23031C0 |  | SW-AF ; Risers-Risers - Main Ducts (All Floor) | 66d | 2011-05-15 A | 2011-10-18 | SAFAF23025C0 | 90% | 6.6d | 2011-08-14 | 2011-10-31 | 134.21d | 1.46d | MECHANICAL [44905.2 h]; Cost [2315766 AED] | 2,315,766 | 2,084,189.4 | SAFAF23031C0 | SW | C | AF | AF | ME | 230 | 31 | BILL 11 | B09 | S2 | RI | R00 | ACF04 | 230 | 1127 | 1520 | 90 | 15 |  | MEP |  |  |  |  |  |  |  | 90 | 5 | 25 | RI |  |  |  |  |
| SAFAF26037C0 |  | SW-AF ; Risers-Tray for ELV risers (All Floor) | 59.88d | 2011-05-15 A | 2011-10-27 | SR8S105101C0, SR8S205101C0, SR8S305101C0 | 60% | 23.95d | 2011-08-10 | 2011-10-20 | 89.5d | 6.05d | ELECTRICAL [579.6 h]; Cost [30074.8 AED] | 30,074.8 | 18,044.88 | SAFAF26037C0 | SW | C | AF | AF | ME | 260 | 37 | BILL 11 | B09 | S2 | MEL | R00 | ACF04 | 260 | 1132 | 233 | 40 | 5 |  | MEP |  |  |  |  |  |  |  |  | 5 | 25 | RI | 0 | 0 | 0 | 0 |
| SAFAF26035C0 |  | SW-AF ; Risers-Tray for Low voltage cables (power, comm, (All Floor) | 59.88d | 2011-05-16 A | 2011-10-27 | SR8S105101C0, SR8S205101C0, SR8S305101C0 | 60% | 23.95d | 2011-08-10 | 2011-10-20 | 47.3d | 0d | ELECTRICAL [696 h]; Cost [38495.7 AED] | 38,495.74 | 23,097.45 | SAFAF26035C0 | SW | C | AF | AF | ME | 260 | 35 | BILL 11 | B09 | S2 | MEL | R00 | ACF04 | 260 | 1130 | 232 | 40 | 5 |  | MEP |  |  |  |  |  |  |  |  | 5 | 25 | RI | 0 | 0 | 0 | 0 |
| SAFAF21101C0 |  | SW-AF ; Risers-Secondary Steel for fire Suppression (All Floor) | 17d | 2011-05-17 A | 2011-10-02 | DAFAF21101C0, SR8S105101C0, SR8S205101C0, SR8S305101C0 | 90% | 1.7d | 2011-06-16 | 2011-07-07 | 126.55d | 0d | Labor General [172.8 h]; Cost [37485.6 AED] | 37,485.6 | 33,737.04 | SAFAF21101C0 | SW | C | AF | AF | ME | 211 | 01 | BILL 11 | B09 | S2 | RI | R00 | ACF04 | 211 | 1121 | 223 | 90 | 5 |  | MEP |  |  |  |  |  |  |  | 90 | 5 | 25 | RI |  |  |  |  |
| SAFAF22005C0 |  | SW-AF ; Risers-Secondary Steel for Domestic cold water risers (All Floor) | 17d | 2011-05-17 A | 2011-10-19 | CAFAF22005C0, DAFAF22005C0, SR8S105101C0, SR8S205101C0, SR8S305101C0 | 5% | 16.15d | 2011-06-16 | 2011-07-07 | 76.22d | 0d | Labor General [172.8 h]; Cost [3263.75 AED] | 3,263.75 | 163.19 | SAFAF22005C0 | SW | C | AF | AF | ME | 220 | 05 | BILL 11 | B09 | S2 | RI | R00 | ACF04 | 220 | 1122 | 224 |  |  |  | MEP |  |  |  |  |  |  |  |  | 5 | 25 | RI |  |  |  |  |
| SAFAF22011C0 |  | SW-AF ; Risers-Secondary Steel for Soil, waste & vent ris (All Floor) | 17d | 2011-05-17 A | 2011-10-08 | SR8S105101C0, SR8S205101C0, SR8S305101C0 | 60% | 6.8d | 2011-06-16 | 2011-07-07 | 127.48d | 0d | Labor General [172.8 h]; Cost [36916.5 AED] | 36,916.5 | 22,149.9 | SAFAF22011C0 | SW | C | AF | AF | ME | 220 | 11 | BILL 11 | B09 | S2 | RI | R00 | ACF04 | 220 | 1125 | 227 | 60 | 5 |  | MEP |  |  |  |  |  |  |  |  | 5 | 25 | RI |  |  |  |  |
| SAFAF22013C0 |  | SW-AF ; Risers-Secondary Steel for Storm water drainage risers (All Floor) | 17d | 2011-05-17 A | 2011-10-04 | CAFAF22013C0, SR8S105101C0, SR8S205101C0, SR8S305101C0 | 80% | 3.4d | 2011-06-16 | 2011-07-07 | 124.85d | 0d | Labor General [172.8 h]; Cost [13178.8 AED] | 13,178.75 | 10,543 | SAFAF22013C0 | SW | C | AF | AF | ME | 220 | 13 | BILL 11 | B09 | S2 | RI | R00 | ACF04 | 220 | 1126 | 228 | 60 | 5 |  | MEP |  |  |  |  |  |  |  | 60 | 5 | 25 | RI | 0 | 0 | 0 | 0 |
| SAFAF26033C0 |  | SW-AF ; Risers-Tray for High voltage cables (All Floor) | 59.88d | 2011-05-18 A | 2011-09-29 A | SR8S105101C0, SR8S205101C0, SR8S305101C0 | 100% |  | 2011-08-10 | 2011-10-20 |  |  | ELECTRICAL [927.6 h]; Cost [51728.7 AED] | 51,728.66 | 51,728.66 | SAFAF26033C0 | SW | C | AF | AF | ME | 260 | 33 | BILL 11 | B09 | S2 | MEL | R00 | ACF04 | 260 | 1129 | 231 | 40 | 5 |  | MEP |  |  |  |  |  |  |  |  | 5 | 25 | RI |  |  |  |  |
| SAFAF22017C0 |  | SW-AF ; Risers-Storm water drainage risers (All Floor) | 60d | 2011-07-10 A | 2011-10-29 | CAFAF22017C0, SAFAF22013C0 | 65% | 21d | 2011-07-26 | 2011-10-06 | 124.85d | 0d | PLUMBING [4441.2 h]; Cost [229310 AED] | 229,310.25 | 149,051.66 | SAFAF22017C0 | SW | C | AF | AF | ME | 220 | 17 | BILL 11 | B09 | S2 | RI | R00 | ACF04 | 220 | 1126 | 1519 | 60 | 25 |  | MEP |  |  |  |  |  |  |  | 60 |  |  | RI | 0 | 0 | 0 | 0 |
| SAFAF26039C0 |  | SW-AF ; Risers-High voltage cables (All Floor) | 42d | 2011-09-05 A | 2011-10-05 | SAFAF26033C0 | 90% | 4.2d | 2011-10-12 | 2011-12-06 | 109.05d | 38.04d | ELECTRICAL [6195.6 h]; Cost [338210 AED] | 338,210.4 | 304,389.36 | SAFAF26039C0 | SW | C | AF | AF | ME | 260 | 39 | BILL 11 | B09 | S2 | MEL | R00 | ACF04 | 260 | 1129 | 1522 |  |  |  | MEP |  |  |  |  |  |  |  |  |  |  | RI |  |  |  |  |
| SAFAF26043C0 |  | SW-AF ; Risers-Lightning protection cables (All Floor) | 60d | 2011-10-01 | 2011-12-14 | DAFAF26043C0, SR8S103399C0, SR8S203399C0, SR8S303399C0 |  |  |  |  | 89.25d | 13.03d | ELECTRICAL [11097.6 h]; Cost |  |  | SAFAF26043C0 | SW | C | AF | AF | ME | 260 | 43 | BILL 11 | B09 | S2 | MEL | R00 | ACF04 | 260 | 1131 | 1524 |  |  |  | MEP |  |  |  |  |  |  |  |  |  | 20 | RI |  |  |  |  |
| SAFAF26041C0 |  | SW-AF ; Risers-ELV Cables (All Floor) | 59.75d | 2011-10-16 | 2011-12-31 | SAFAF21103C0 FF, SAFAF22017C0 FF, SAFAF22019C0 FF, SAFAF22021C0 FF, SAFAF22023C0 FF, SAFAF23029C0 FF, SAFAF23031C0 FF, SAFAF26037C0 SS, SAFAF26043C0 FF |  |  |  |  | 76.22d | 0d | ELECTRICAL [4495.2 h]; Cost |  |  | SAFAF26041C0 | SW | C | AF | AF | ME | 260 | 41 | BILL 11 | B09 | S2 | MEL | R00 | ACF04 | 260 | 1132 | 1525 |  |  |  | MEP |  |  |  |  |  |  |  |  |  |  | RI |  |  |  |  |
| SAFAF26045C0 |  | SW-AF ; Risers-Low voltage cables (power, comm, security) (All Floor) | 42d | 2011-10-27 | 2011-12-21 | SAFAF26035C0 |  |  |  |  | 47.3d | 0d | ELECTRICAL [13258.8 h]; Cost |  |  | SAFAF26045C0 | SW | C | AF | AF | ME | 260 | 45 | BILL 11 | B09 | S2 | MEL | R00 | ACF04 | 260 | 1130 | 1523 |  |  |  | MEP |  |  |  |  |  |  |  |  |  |  | RI |  |  |  |  |

| ID | WBS | Activity | Duration | Start | Finish | Predecessors | Total float | Free float | Constraint | Resources | change id | CCAD BUILDING(SET) | CCAD PHASE(SET) | CCAD FLOOR(SET) | CCAD ZONE(SET) | CCAD WORK(SET) | CCAD SECTION(SET) | CCAD SERIAL No.(SET) | CCAD CBS(SET) | CCAD BILL(SET) | CCAD HANDOVER(SET) | CCAD TAG(SET) | CCAD REV(SET) | CCADACF (SET) | CCAD SSCF | No.of Wor Days | Duration/Differe | CCAD CSA | NEW ACTIVITY ID |
| --- | --- | --- | --- | --- | --- | --- | --- | --- | --- | --- | --- | --- | --- | --- | --- | --- | --- | --- | --- | --- | --- | --- | --- | --- | --- | --- | --- | --- | --- |
|  | 10 | **Precommissioning Tesing & snagging** |  | 2011-12-31 | 2012-02-14 |  |  |  |  |  |  |  |  |  |  |  |  |  |  |  |  |  |  |  |  |  |  |  |  |
| SAFTS01802C0 |  | SW-AF ; MEP de-snag, FIREM sign-off | 12d | 2011-12-31 | 2012-01-15 | SAFAF26039C0, SAFAF26041C0, SAFAF26045C0 | 288.47d | 0d |  | TESTING & COMMISSIONING [1020 h]; Cost | SAFTS01802C0 | SW | C | AF | TS | SC | 018 | 02 | BILL 11 | B09 | S2 | 01 | R00 | ACF07 | 018 |  |  |  |  |
| SAFTS01801C0 |  | SW-AF ; Touch-up & Clean / JV inspection /CIR /De-snag | 18d | 2012-01-15 | 2012-02-06 | SAFAF26039C0, SAFAF26041C0, SAFAF26045C0, SAFTS01802C0 | 288.47d | 0d |  | TESTING & COMMISSIONING [170 h]; Cost | SAFTS01801C0 | SW | C | AF | TS | SC | 018 | 01 | BILL 11 | B09 | S2 | 02 | R00 | ACF07 | 018 |  |  |  |  |
| SAFTS01803C0 |  | SW-AF ; Consultant's final de-snag inspection | 7d | 2012-02-06 | 2012-02-14 | SAFTS01801C0 | 288.47d | 198.42d |  | Labor General [0.5 h]; Cost | SAFTS01803C0 | SW | C | AF | TS | SC | 018 | 03 | BILL 11 | B09 | S2 | 03 | R00 | ACF07 | 018 |  |  |  |  |
|  | VT | **Vertical Transpotation** |  | 2011-10-25 | 2013-01-29 |  |  |  |  |  |  |  |  |  |  |  |  |  |  |  |  |  |  |  |  |  |  |  |  |
|  | EL34 | **Lift (#34~35)** |  | 2011-10-25 | 2013-01-29 |  |  |  |  |  |  |  |  |  |  |  |  |  |  |  |  |  |  |  |  |  |  |  |  |
| SVT3414203C0 |  | SW-AF ; Ele(#34~35)- Fixing template, Plumbing (Lift) | 4d | 2011-10-25 | 2011-10-29 | SR8S103399C0, SR8S203399C0, SR8S303399C0, SR8SA03307C0, SR8SC03305C0, GNHE08101C10 FS+54d | 42.89d | 0d |  | SERVICE LIFTS [7 h]; Cost | SVT3414203C0 | SW | C | VT | 34 | EL | 142 | 03 | BILL 11 | B11 | S2 | 11 | R00 | ACF11 | 142 | 125058816 | 117440512 | LE |  |
| SVT3414205C0 |  | SW-AF ; Ele(#34~35)- Install first rails (Lift) | 2d | 2011-10-30 | 2011-10-31 | SVT3414203C0 | 42.89d | 0d |  | SERVICE LIFTS [15 h]; Cost | SVT3414205C0 | SW | C | VT | 34 | EL | 142 | 05 | BILL 11 | B11 | S2 | 11 | R00 | ACF11 | 142 | 125058816 |  | LE |  |
| SVT3414207C0 |  | SW-AF ; Ele(#34~35)- Build false car (Lift) | 3d | 2011-11-01 | 2011-11-03 | SVT3414205C0 | 42.89d | 0d |  | SERVICE LIFTS [22 h]; Cost | SVT3414207C0 | SW | C | VT | 34 | EL | 142 | 07 | BILL 11 | B11 | S2 | 11 | R00 | ACF11 | 142 | 123044096 | 117440512 | LE |  |
| SVT3414209C0 |  | SW-AF ; Ele(#34~35)- Install brackets, rails & alignment (Lift) | 7d | 2011-11-05 | 2011-11-15 | SVT3414207C0 | 42.89d | 0d |  | SERVICE LIFTS [284 h]; Cost | SVT3414209C0 | SW | C | VT | 34 | EL | 142 | 09 | BILL 11 | B11 | S2 | 11 | R00 | ACF11 | 142 | 123044096 |  | LE |  |
| SVT3414211C0 |  | SW-AF ; Ele(#34~35)- Install Entrance frames & doors (Lift) | 8d | 2011-11-16 | 2011-11-24 | SVT3414209C0 | 42.89d | 0d |  | SERVICE LIFTS [209 h]; Cost | SVT3414211C0 | SW | C | VT | 34 | EL | 142 | 11 | BILL 11 | B11 | S2 | 11 | R00 | ACF11 | 142 | 125058816 |  | LE |  |
| SVT3414213C0 |  | SW-AF ; Ele(#34~35)- Install Machine & Controller (Lift) | 5d | 2011-11-27 | 2011-12-01 | SVT3414211C0 | 42.89d | 0d |  | SERVICE LIFTS [299 h]; Cost | SVT3414213C0 | SW | C | VT | 34 | EL | 142 | 13 | BILL 11 | B11 | S2 | 11 | R00 | ACF11 | 142 | 125058816 | 117440512 | LE |  |
| SVT3414215C0 |  | SW-AF ; Ele(#34~35)- Install Governor & rope (Lift) | 2d | 2011-12-04 | 2011-12-05 | SVT3414213C0 | 42.89d | 0d |  | SERVICE LIFTS [60 h]; Cost | SVT3414215C0 | SW | C | VT | 34 | EL | 142 | 15 | BILL 11 | B11 | S2 | 11 | R00 | ACF11 | 142 |  |  | LE |  |
| SVT3414217C0 |  | SW-AF ; Ele(#34~35)- Install counterweight frame (Lift) | 2.88d | 2011-12-06 | 2011-12-08 | SVT3414215C0 | 42.89d | 0d |  | SERVICE LIFTS [60 h]; Cost | SVT3414217C0 | SW | C | VT | 34 | EL | 142 | 17 | BILL 11 | B11 | S2 | 11 | R00 | ACF11 | 142 |  | 117440512 | LE |  |
| SVT3414219C0 |  | SW-AF ; Ele(#34~35)- Hoistway truncking & Wiring (Lift) | 7d | 2011-12-08 | 2011-12-17 | SVT3414217C0 | 42.89d | 0d |  | SERVICE LIFTS [67 h]; Cost | SVT3414219C0 | SW | C | VT | 34 | EL | 142 | 19 | BILL 11 | B11 | S2 | 11 | R00 | ACF11 | 142 |  |  | LE |  |
| SVT3414221C0 |  | SW-AF ; Ele(#34~35)- Machine room wiring (Lift) | 4.88d | 2011-12-17 | 2011-12-22 | SVT3414219C0 | 42.89d | 0d |  | SERVICE LIFTS [15 h]; Cost | SVT3414221C0 | SW | C | VT | 34 | EL | 142 | 21 | BILL 11 | B11 | S2 | 11 | R00 | ACF11 | 142 | 125058816 | 117440512 | LE |  |
| SVT3414223C0 |  | SW-AF ; Ele(#34~35)- Build car frame (Lift) | 3d | 2011-12-22 | 2011-12-26 | SVT3414221C0 | 42.89d | 0d |  | SERVICE LIFTS [112 h]; Cost | SVT3414223C0 | SW | C | VT | 34 | EL | 142 | 23 | BILL 11 | B11 | S2 | 11 | R00 | ACF11 | 142 |  | 117440512 | LE |  |
| SVT3414225C0 |  | SW-AF ; Ele(#34~35)- Main roping (Lift) | 3d | 2011-12-26 | 2011-12-29 | SVT3414223C0 | 42.89d | 0d |  | SERVICE LIFTS [60 h]; Cost | SVT3414225C0 | SW | C | VT | 34 | EL | 142 | 25 | BILL 11 | B11 | S2 | 11 | R00 | ACF11 | 142 | -65536 | 117440512 | LE |  |
| SVT3414227C0 |  | SW-AF ; Ele(#34~35)- Loading counterweights (Lift) | 3d | 2011-12-29 | 2012-01-03 | SVT3414225C0 | 42.89d | 0d |  | SERVICE LIFTS [15 h]; Cost | SVT3414227C0 | SW | C | VT | 34 | EL | 142 | 27 | BILL 11 | B11 | S2 | 11 | R00 | ACF11 | 142 | 125058816 |  | LE |  |
| SVT3414229C0 |  | SW-AF ; Ele(#34~35)- Dismantling false car (Lift) | 3d | 2012-01-03 | 2012-01-07 | SVT3414227C0 | 42.89d | 0d |  | SERVICE LIFTS [7 h]; Cost | SVT3414229C0 | SW | C | VT | 34 | EL | 142 | 29 | BILL 11 | B11 | S2 | 11 | R00 | ACF11 | 142 | 125058816 |  | LE |  |
| SVT3414231C0 |  | SW-AF ; Ele(#34~35)- Build cab & Wiring (Lift) | 15d | 2012-01-07 | 2012-01-24 | SVT3414223C0, SVT3414229C0 | 42.89d | 0d |  | SERVICE LIFTS [105 h]; Cost | SVT3414231C0 | SW | C | VT | 34 | EL | 142 | 31 | BILL 11 | B11 | S2 | 11 | R00 | ACF11 | 142 | 123044096 | 1593835520 | LE |  |
| SVT3414247C0 |  | SW-AF ; Ele(#34~35)- Inspection, Testing & Commis (Lift) | 6d | 2012-01-24 | 2012-01-31 | SVT3414231C0 | 42.89d | 23.65d |  | SERVICE LIFTS [75 h]; Cost | CVT3914247C0 | SW | C | VT | 34 | EL | 142 | 47 | BILL 11 | B11 | S2 | 11 | R00 | ACF11 | 142 |  |  | LE | 1531 |
| SVT3414248C0 |  | SW-AF ; Ele(#34~35)- Refurbishment | 35d | 2012-12-18 | 2013-01-29 | SVT3414247C0 | 16d | 0d | as late as possible | Labor General; Cost | CVT3914247C0 | SW | C | VT | 34 | EL | 142 | 47 | BILL 11 | B11 | S1 | 11 | R00 | ACF11 | 142 |  |  |  | 1531 |
|  | EL41 | **Lift (#41~42)** |  | 2012-02-01 | 2013-01-29 |  |  |  |  |  |  |  |  |  |  |  |  |  |  |  |  |  |  |  |  |  |  |  |  |
| SVT4114203C0 |  | SW-AF ; Ele(#41~42)- Fixing template, Plumbing (Lift) | 3d | 2012-02-01 | 2012-02-05 | SR8S103399C0, SR8S203399C0, SR8S303399C0, SR8SA03307C0, SR8SC03305C0, GNHE08101C10 FS+153d | 133.5d | 0d |  | SERVICE LIFTS [7 h]; Cost | SVT4114203C0 | SW | C | VT | 41 | EL | 142 | 03 | BILL 11 | B11 | S2 | 08 | R00 | ACF11 | 142 | 123044096 | 1593835520 | LE |  |
| SVT4114205C0 |  | SW-AF ; Ele(#41~42)- Install first rails (Lift) | 3d | 2012-02-06 | 2012-02-08 | SVT4114203C0 | 133.5d | 0d |  | SERVICE LIFTS [15 h]; Cost | SVT4114205C0 | SW | C | VT | 41 | EL | 142 | 05 | BILL 11 | B11 | S2 | 08 | R00 | ACF11 | 142 | 125058816 |  | LE |  |
| SVT4114207C0 |  | SW-AF ; Ele(#41~42)- Build false car (Lift) | 3d | 2012-02-09 | 2012-02-12 | SVT4114205C0 | 133.5d | 0d |  | SERVICE LIFTS [22 h]; Cost | SVT4114207C0 | SW | C | VT | 41 | EL | 142 | 07 | BILL 11 | B11 | S2 | 08 | R00 | ACF11 | 142 | 125058816 |  | LE |  |
| SVT4114209C0 |  | SW-AF ; Ele(#41~42)- Install brackets, rails & alignment (Lift) | 12d | 2012-02-13 | 2012-02-26 | SVT4114207C0 | 133.5d | 0d |  | SERVICE LIFTS [284 h]; Cost | SVT4114209C0 | SW | C | VT | 41 | EL | 142 | 09 | BILL 11 | B11 | S2 | 08 | R00 | ACF11 | 142 | 123044096 | 117440512 | LE |  |
| SVT4114211C0 |  | SW-AF ; Ele(#41~42)- Install Entrance frames & doors (Lift) | 12d | 2012-02-27 | 2012-03-11 | SVT4114209C0 | 133.5d | 0d |  | SERVICE LIFTS [217 h]; Cost | SVT4114211C0 | SW | C | VT | 41 | EL | 142 | 11 | BILL 11 | B11 | S2 | 08 | R00 | ACF11 | 142 |  |  | LE |  |
| SVT4114213C0 |  | SW-AF ; Ele(#41~42)- Install Machine & Controller (Lift) | 5d | 2012-03-12 | 2012-03-17 | SVT4114211C0 | 212.12d | 0d |  | SERVICE LIFTS [307 h]; Cost | SVT4114213C0 | SW | C | VT | 41 | EL | 142 | 13 | BILL 11 | B11 | S2 | 08 | R00 | ACF11 | 142 | 538976256 |  | LE |  |
| SVT4114215C0 |  | SW-AF ; Ele(#41~42)- Install Governor & rope (Lift) | 3d | 2012-03-18 | 2012-03-20 | SVT4114213C0 | 212.12d | 0d |  | SERVICE LIFTS [60 h]; Cost | SVT4114215C0 | SW | C | VT | 41 | EL | 142 | 15 | BILL 11 | B11 | S2 | 08 | R00 | ACF11 | 142 | 123044096 |  | LE |  |
| SVT4114217C0 |  | SW-AF ; Ele(#41~42)- Install counterweight frame (Lift) | 2d | 2012-03-21 | 2012-03-22 | SVT4114215C0 | 212.12d | 0d |  | SERVICE LIFTS [60 h]; Cost | SVT4114217C0 | SW | C | VT | 41 | EL | 142 | 17 | BILL 11 | B11 | S2 | 08 | R00 | ACF11 | 142 | 125058816 | 268435456 | LE |  |
| SVT4114219C0 |  | SW-AF ; Ele(#41~42)- Hoistway truncking & Wiring (Lift) | 4d | 2012-03-24 | 2012-03-27 | SVT4114217C0 | 212.12d | 0d |  | SERVICE LIFTS [75 h]; Cost | SVT4114219C0 | SW | C | VT | 41 | EL | 142 | 19 | BILL 11 | B11 | S2 | 08 | R00 | ACF11 | 142 | 123044096 |  | LE |  |
| SVT4114221C0 |  | SW-AF ; Ele(#41~42)- Machine room wiring (Lift) | 3.88d | 2012-03-28 | 2012-04-01 | SVT4114219C0 | 212.12d | 0d |  | SERVICE LIFTS [15 h]; Cost | SVT4114221C0 | SW | C | VT | 41 | EL | 142 | 21 | BILL 11 | B11 | S2 | 08 | R00 | ACF11 | 142 |  | 117440512 | LE |  |
| SVT4114223C0 |  | SW-AF ; Ele(#41~42)- Build car frame (Lift) | 2d | 2012-04-01 | 2012-04-03 | SVT4114221C0 | 212.12d | 0d |  | SERVICE LIFTS [112 h]; Cost | SVT4114223C0 | SW | C | VT | 41 | EL | 142 | 23 | BILL 11 | B11 | S2 | 08 | R00 | ACF11 | 142 | 125058816 |  | LE |  |
| SVT4114225C0 |  | SW-AF ; Ele(#41~42)- Main roping (Lift) | 3d | 2012-04-03 | 2012-04-07 | SVT4114223C0 | 217.12d | 0d |  | SERVICE LIFTS [60 h]; Cost | SVT4114225C0 | SW | C | VT | 41 | EL | 142 | 25 | BILL 11 | B11 | S2 | 08 | R00 | ACF11 | 142 | 262144 | 117440512 | LE |  |
| SVT4114231C0 |  | SW-AF ; Ele(#41~42)- Build cab & Wiring (Lift) | 12d | 2012-04-03 | 2012-04-17 | SVT4114223C0, VZ9GZ14350R2 FF | 212.12d | 0d |  | SERVICE LIFTS [105 h]; Cost | SVT4114231C0 | SW | C | VT | 41 | EL | 142 | 31 | BILL 11 | B11 | S2 | 08 | R00 | ACF11 | 142 | 125058816 | 117440512 | LE |  |
| SVT4114227C0 |  | SW-AF ; Ele(#41~42)- Loading counterweights (Lift) | 2d | 2012-04-07 | 2012-04-09 | SVT4114225C0 | 217.12d | 0d |  | SERVICE LIFTS [15 h]; Cost | SVT4114227C0 | SW | C | VT | 41 | EL | 142 | 27 | BILL 11 | B11 | S2 | 08 | R00 | ACF11 | 142 | 125058816 |  | LE |  |
| SVT4114229C0 |  | SW-AF ; Ele(#41~42)- Dismantling false car (Lift) | 2d | 2012-04-09 | 2012-04-11 | SVT4114227C0 | 217.12d | 5d |  | SERVICE LIFTS [7 h]; Cost | SVT4114229C0 | SW | C | VT | 41 | EL | 142 | 29 | BILL 11 | B11 | S2 | 08 | R00 | ACF11 | 142 | 125058816 | -16777216 | LE |  |
| SVT4114247C0 |  | SW-AF ; Ele(#41~42)- Inspection, Testing & Commis (Lift) | 6d | 2012-04-17 | 2012-04-24 | SVT4114229C0, SVT4114231C0 | 212.12d | 196.12d |  | SERVICE LIFTS [82 h]; Cost | CVT3914247C0 | SW | C | VT | 41 | EL | 142 | 47 | BILL 11 | B11 | S2 | 08 | R00 | ACF11 | 142 |  |  | LE | 1531 |
| SVT4114248C0 |  | SW-AF ; Ele(#41~42)- Refurbishment | 35d | 2012-12-18 | 2013-01-29 | SVT4114247C0, SVTLT09619C0 FF+7d | 16d | 0d | as late as possible | Labor General [0.5 h]; Cost | CVT3914247C0 | SW | C | VT | 41 | EL | 142 | 47 | BILL 11 | B11 | S2 | 08 | R00 | ACF11 | 142 |  |  | LE | 1531 |

| ID | WBS | Activity | Duration | Start | Finish | Predecessors | Complete | Remaining | Planned start | Planned finish | Total float | Free float | Resources | change id | No.of Wor Days | Duration/Differe | CCAD BUILDING(SET) | CCAD PHASE(SET) | CCAD FLOOR(SET) | CCAD ZONE(SET) | CCAD WORK(SET) | CCAD SECTION(SET) | CCAD SERIAL No.(SET) | CCAD CBS(SET) | CCAD BILL(SET) | CCAD HANDOVER(SET) | CCAD TAG(SET) | CCAD REV(SET) | CCADACF (SET) | CCAD CSA | CCAD SSCF | NEW ACTIVITY ID | P_811 | P_711 |
| --- | --- | --- | --- | --- | --- | --- | --- | --- | --- | --- | --- | --- | --- | --- | --- | --- | --- | --- | --- | --- | --- | --- | --- | --- | --- | --- | --- | --- | --- | --- | --- | --- | --- | --- |
|  | EL43 | **Lift (#43~45)** |  | 2012-02-01 | 2012-05-03 |  |  |  |  |  |  |  |  |  |  |  |  |  |  |  |  |  |  |  |  |  |  |  |  |  |  |  |  |  |
| SVT4314203C0 |  | SW-AF ; Ele(#43~45)- Fixing template, Plumbing (Lift) | 4d | 2012-02-01 | 2012-02-06 | S07PA09203C0, SR8S103399C0, SR8S203399C0, SR8S303399C0, SR8SA03307C0, SR8SC03305C0, GNHE08101C10 FS+153d |  |  |  |  | 139.5d | 0d | SERVICE LIFTS [30 h]; Cost | SVT4314203C0 | 125058816 | 117440512 | SW | C | VT | 43 | EL | 142 | 03 | BILL 11 | B11 | S2 | 07 | R00 | ACF11 | LE | 142 |  |  |  |
| SVT4314205C0 |  | SW-AF ; Ele(#43~45)- Install first rails (Lift) | 2d | 2012-02-07 | 2012-02-08 | SVT4314203C0 |  |  |  |  | 139.5d | 0d | SERVICE LIFTS [37 h]; Cost | SVT4314205C0 | 125058816 | 268435456 | SW | C | VT | 43 | EL | 142 | 05 | BILL 11 | B11 | S2 | 07 | R00 | ACF11 | LE | 142 |  |  |  |
| SVT4314207C0 |  | SW-AF ; Ele(#43~45)- Build false car (Lift) | 3d | 2012-02-09 | 2012-02-12 | SVT4314205C0 |  |  |  |  | 139.5d | 0d | SERVICE LIFTS [60 h]; Cost | SVT4314207C0 | 125058816 | 117440512 | SW | C | VT | 43 | EL | 142 | 07 | BILL 11 | B11 | S2 | 07 | R00 | ACF11 | LE | 142 |  |  |  |
| SVT4314209C0 |  | SW-AF ; Ele(#43~45)- Install brackets, rails & alignment (Lift) | 9d | 2012-02-13 | 2012-02-22 | SVT4314207C0 |  |  |  |  | 139.5d | 0d | SERVICE LIFTS [808 h]; Cost | SVT4314209C0 |  | 117440512 | SW | C | VT | 43 | EL | 142 | 09 | BILL 11 | B11 | S2 | 07 | R00 | ACF11 | LE | 142 |  |  |  |
| SVT4314211C0 |  | SW-AF ; Ele(#43~45)- Install Entrance frames & doors (Lift) | 9d | 2012-02-23 | 2012-03-04 | SVT4314209C0 |  |  |  |  | 139.5d | 0d | SERVICE LIFTS [606 h]; Cost | SVT4314211C0 |  |  | SW | C | VT | 43 | EL | 142 | 11 | BILL 11 | B11 | S2 | 07 | R00 | ACF11 | LE | 142 |  |  |  |
| SVT4314213C0 |  | SW-AF ; Ele(#43~45)- Install Machine & Controller (Lift) | 5d | 2012-03-05 | 2012-03-10 | SVT4314211C0 |  |  |  |  | 239.12d | 0d | SERVICE LIFTS [853 h]; Cost | SVT4314213C0 | -256 | 117440512 | SW | C | VT | 43 | EL | 142 | 13 | BILL 11 | B11 | S2 | 07 | R00 | ACF11 | LE | 142 |  |  |  |
| SVT4314215C0 |  | SW-AF ; Ele(#43~45)- Install Governor & rope (Lift) | 1.88d | 2012-03-11 | 2012-03-12 | SVT4314213C0 |  |  |  |  | 239.12d | 0d | SERVICE LIFTS [165 h]; Cost | SVT4314215C0 | 125058816 | 117440512 | SW | C | VT | 43 | EL | 142 | 15 | BILL 11 | B11 | S2 | 07 | R00 | ACF11 | LE | 142 |  |  |  |
| SVT4314217C0 |  | SW-AF ; Ele(#43~45)- Install counterweight frame (Lift) | 3d | 2012-03-12 | 2012-03-15 | SVT4314215C0 |  |  |  |  | 239.12d | 0d | SERVICE LIFTS [165 h]; Cost | SVT4314217C0 |  |  | SW | C | VT | 43 | EL | 142 | 17 | BILL 11 | B11 | S2 | 07 | R00 | ACF11 | LE | 142 |  |  |  |
| SVT4314219C0 |  | SW-AF ; Ele(#43~45)- Hoistway truncking & Wiring (Lift) | 7d | 2012-03-15 | 2012-03-24 | SVT4314217C0 |  |  |  |  | 239.12d | 0d | SERVICE LIFTS [202 h]; Cost | SVT4314219C0 | 125058816 | 117440512 | SW | C | VT | 43 | EL | 142 | 19 | BILL 11 | B11 | S2 | 07 | R00 | ACF11 | LE | 142 |  |  |  |
| SVT4314221C0 |  | SW-AF ; Ele(#43~45)- Machine room wiring (Lift) | 5d | 2012-03-24 | 2012-03-29 | SVT4314219C0 |  |  |  |  | 239.12d | 0d | SERVICE LIFTS [37 h]; Cost | SVT4314221C0 | -256 | 117440512 | SW | C | VT | 43 | EL | 142 | 21 | BILL 11 | B11 | S2 | 07 | R00 | ACF11 | LE | 142 |  |  |  |
| SVT4314223C0 |  | SW-AF ; Ele(#43~45)- Build car frame (Lift) | 3d | 2012-03-29 | 2012-04-02 | SVT4314221C0 |  |  |  |  | 239.12d | 0d | SERVICE LIFTS [322 h]; Cost | SVT4314223C0 | 125058816 | -16777216 | SW | C | VT | 43 | EL | 142 | 23 | BILL 11 | B11 | S2 | 07 | R00 | ACF11 | LE | 142 |  |  |  |
| SVT4314225C0 |  | SW-AF ; Ele(#43~45)- Main roping (Lift) | 3d | 2012-04-02 | 2012-04-05 | SVT4314223C0 |  |  |  |  | 239.12d | 0d | SERVICE LIFTS [165 h]; Cost | SVT4314225C0 |  | 117440512 | SW | C | VT | 43 | EL | 142 | 25 | BILL 11 | B11 | S2 | 07 | R00 | ACF11 | LE | 142 |  |  |  |
| SVT4314227C0 |  | SW-AF ; Ele(#43~45)- Loading counterweights (Lift) | 3d | 2012-04-05 | 2012-04-09 | SVT4314225C0 |  |  |  |  | 239.12d | 0d | SERVICE LIFTS [37 h]; Cost | SVT4314227C0 |  |  | SW | C | VT | 43 | EL | 142 | 27 | BILL 11 | B11 | S2 | 07 | R00 | ACF11 | LE | 142 |  |  |  |
| SVT4314229C0 |  | SW-AF ; Ele(#43~45)- Dismantling false car (Lift) | 3d | 2012-04-09 | 2012-04-12 | SVT4314227C0 |  |  |  |  | 239.12d | 0d | SERVICE LIFTS [22 h]; Cost | SVT4314229C0 |  |  | SW | C | VT | 43 | EL | 142 | 29 | BILL 11 | B11 | S2 | 07 | R00 | ACF11 | LE | 142 |  |  |  |
| SVT4314231C0 |  | SW-AF ; Ele(#43~45)- Build cab & Wiring (Lift) | 12d | 2012-04-12 | 2012-04-26 | SVT4314223C0, SVT4314229C0 |  |  |  |  | 239.12d | 0d | SERVICE LIFTS [299 h]; Cost | SVT4314231C0 | 125058816 |  | SW | C | VT | 43 | EL | 142 | 31 | BILL 11 | B11 | S2 | 07 | R00 | ACF11 | LE | 142 |  |  |  |
| SVT4314247C0 |  | SW-AF ; Ele(#43~45)- Inspection, Testing & Commis (Lift) | 6d | 2012-04-26 | 2012-05-03 | SVT4314231C0 |  |  |  |  | 239.12d | 223.12d | SERVICE LIFTS [224 h]; Cost | CVT3914247C0 |  |  | SW | C | VT | 43 | EL | 142 | 47 | BILL 11 | B11 | S2 | 07 | R00 | ACF11 | LE | 142 | 1531 |  |  |
|  | CZ | **Controlled Zone** |  | 2013-01-30 | 2013-03-12 |  |  |  |  |  |  |  |  |  |  |  |  |  |  |  |  |  |  |  |  |  |  |  |  |  |  |  |  |  |
| SGNCZ01010G0 |  | SW-GN ; Minor Punch List (Controlled Zone) | 35d | 2013-01-30 | 2013-03-11 | MGNCZ00109M0 |  |  |  |  | 46d | 0d | TESTING & COMMISSIONING [850 h]; Cost | SGNCZ01010G0 |  |  | SW | G | GN | CZ | SC | 010 | 10 | BILL 9 | B09 | S2 | PI | R00 | ACF07 |  | 010 |  |  |  |
| SGNCZ01811G0 |  | SW-GN ; Fire Alarm , PMCS & EMCS Testing & Commissioning (Controlled Zone) | 35d | 2013-01-30 | 2013-03-11 | MGNCZ00109M0 |  |  |  |  | 46d | 0d | TESTING & COMMISSIONING [5098 h]; Cost | SGNCZ01811G0 |  |  | SW | G | GN | CZ | SC | 018 | 11 | BILL 9 | B09 | S2 | 01 | R00 | ACF07 |  | 018 |  |  |  |
| SGNCZ11010G0 |  | SW-GN ; Loose FF & E (Controlled Zone) | 35d | 2013-01-30 | 2013-03-11 | MGNCZ00109M0 |  |  |  |  | 46d | 0d | FF&E [34 h]; Cost | SGNCZ11010G0 |  |  | SW | G | GN | CZ | FI | 110 | 10 | BILL 9 | B09 | S2 | 02 | R00 | ACF08 |  | a |  |  |  |
| SGNCZ11020G0 |  | SW-GN ; Wall Mounted / Sensitive Equipment Install (Controlled Zone) | 35d | 2013-01-30 | 2013-03-11 | MGNCZ00109M0 |  |  |  |  | 46d | 0d | FF&E [23 h]; Cost | SGNCZ11020G0 |  |  | SW | G | GN | CZ | SC | 110 | 20 | BILL 9 | B09 | S2 | 02 | R00 | ACF08 |  | d |  |  |  |
| SGNCZ01100G0 |  | SW-GN ; Cleaning & Final Inspection (Controlled Zone) | 0d | 2013-03-12 | 2013-03-12 | SGNCZ11010G0, SGNCZ01010G0, SGNCZ11020G0, SGNCZ01811G0 |  |  |  |  | 46d | 43.12d | Cost | TGNCZ01020G0 |  |  | PT | G | GN | CZ | SC | 010 | 20 | BILL 10 | B10 | S3 | IN | R00 | ACF07 |  | 010 |  |  |  |
|  | PT | **Patient Tower** |  | 2010-12-26 | 2013-06-16 |  |  |  |  |  |  |  |  |  |  |  |  |  |  |  |  |  |  |  |  |  |  |  |  |  |  |  |  |  |
|  | OA | **Overall** |  | 2011-07-04 | 2012-01-29 |  |  |  |  |  |  |  |  |  |  |  |  |  |  |  |  |  |  |  |  |  |  |  |  |  |  |  |  |  |
| TAFT1505509C0 |  | PT - Steel Staircase Installation (Stair # 15) (P1 to 8FR) | 11d | 2011-07-04 A | 2011-10-02 | SAFT1505509C0 FF | 91% | 1.01d | 2011-08-11 | 2011-08-24 | 391.99d | 351.41d | STRUCTURAL STEEL [15 T(Fe)]; Cost | IP3SE03305C0 |  |  | PT | C | AF | GEN | SW | 055 | 05 |  | B10 | S1 | 01 | R00 | ACF03 | ST | 055 |  | 90 | 85.19 |
| TAFT105509C0 |  | PT - Steel Staircase Installation (Stair # 1) (9F to 21F) | 55d | 2011-09-05 A | 2012-01-08 | SAFT105509C0 | 1% | 54.45d | 2011-10-15 | 2011-12-24 | 173.6d | 59.35d | STRUCTURAL STEEL [126 T(Fe)]; Cost | IP3SE03305C0 |  |  | PT | C | AF | GEN | SW | 055 | 05 |  | B10 | S1 | 01 | R00 | ACF03 | ST | 055 |  |  |  |
| TAFT805509C0 |  | PT - Steel Staircase Installation (Stair # 8) (9F to 21F) | 70d | 2011-11-01 | 2012-01-29 | IAFT805509C0 |  |  |  |  | 155.39d | 41.14d | STRUCTURAL STEEL [126 T(Fe)]; Cost | IP3SE03305C0 |  |  | PT | C | AF | GEN | SW | 055 | 05 |  | B10 | S1 | 01 | R00 | ACF03 | ST | 055 |  |  |  |

| ID | WBS | Activity | Duration | Start | Finish | Predecessors | Complete | Remaining | Planned start | Planned finish | Total float | Free float | Resources | change id | RENZ % COMPLETE | Phase | CCAD BUILDING(SET) | CCAD PHASE(SET) | CCAD FLOOR(SET) | CCAD ZONE(SET) | CCAD WORK(SET) | CCAD SECTION(SET) | CCAD SERIAL No.(SET) | Area/ Department | Grids | Are | Weight & Nos | Process | Levels | CCAD CBS(SET) | CCAD BILL(SET) | CCAD HANDOVER(SET) | CCAD TAG(SET) | CCAD REV(SET) | CCADACF (SET) | CCAD SSCF | ACCESS DATES | CCAD CSA | Claimed This Month | U% | P_811 | P_711 |
| --- | --- | --- | --- | --- | --- | --- | --- | --- | --- | --- | --- | --- | --- | --- | --- | --- | --- | --- | --- | --- | --- | --- | --- | --- | --- | --- | --- | --- | --- | --- | --- | --- | --- | --- | --- | --- | --- | --- | --- | --- | --- | --- |
|  | 08 | **Level 8** |  |  |  |  |  |  |  |  |  |  |  |  |  |  |  |  |  |  |  |  |  |  |  |  |  |  |  |  |  |  |  |  |  |  |  |  |  |  |  |  |
|  | 01 | **Structure & Envelopment** |  |  |  |  |  |  |  |  |  |  |  |  |  |  |  |  |  |  |  |  |  |  |  |  |  |  |  |  |  |  |  |  |  |  |  |  |  |  |  |  |
|  | 10 | **Precommissioning Tesing & snagging** |  |  |  |  |  |  |  |  |  |  |  |  |  |  |  |  |  |  |  |  |  |  |  |  |  |  |  |  |  |  |  |  |  |  |  |  |  |  |  |  |
|  | 09 | **Level 9** |  | 2010-12-26 | 2013-01-10 |  |  |  |  |  |  |  |  |  |  |  |  |  |  |  |  |  |  |  |  |  |  |  |  |  |  |  |  |  |  |  |  |  |  |  |  |  |
|  | 01 | **Structure & Envelopment** |  | 2010-12-26 | 2012-09-20 |  |  |  |  |  |  |  |  |  |  |  |  |  |  |  |  |  |  |  |  |  |  |  |  |  |  |  |  |  |  |  |  |  |  |  |  |  |
| T09SA03301C0 |  | PT-09 ; Corewall Concrete (Zone SA) | 4d | 2010-12-26 A | 2011-01-09 A | SR8SA03307C0 | 100% |  | 2011-02-01 | 2011-02-05 |  |  | CONCRETE [12600 h]; CONCRETE [317 m3]; Cost | T09SA03301C0 | 100 | Z2 | PT | C | 09 | SA | CT | 033 | 01 | PA | TRUS | D | A10 | EREC | 10FLR | BILL 10 | B10 | S2 | 04 | R00 | ACF03 | 033 |  |  |  |  |  |  |
| T09SB03303C0 |  | PT-09 ; Corewall Concrete (Zone SB) | 4d | 2010-12-31 A | 2011-01-20 A | IR8SB03303C0 | 100% |  | 2011-02-01 | 2011-02-05 |  |  | CONCRETE [12600 h]; CONCRETE [317 m3]; Cost | T09SB03303C0 | 100 | Z2 | PT | C | 09 | SB | CT | 033 | 03 | PA | TRUS | D | A10 | EREC | 10FLR | BILL 10 | B10 | S2 | 04 | R00 | ACF03 | 033 |  |  |  |  |  |  |
| T09CO05115C0 |  | PT-09 ; Erection of Trusses on Temp. Supports (Option B) (Common Zone) | 32.4d | 2011-02-06 A | 2011-05-31 A | IR8S105103C0, SR8S105103C0, T09CO05101C0, T09CO05109C0 | 100% |  | 2011-04-21 | 2011-05-29 |  |  | STRUCTURAL STEEL [36277 h]; STRUCTURAL STEEL [1970 T(Fe)]; Cost | T09CO05115C0 | 100 | Z2 | PT | C | 09 | CO | ST | 051 | 15 | PA | TRUS | D | A10 | FIRE | 10FLR | BILL 10 | B10 | S2 | 01 | R00 | ACF03 | 051 | ACCESS | ST |  |  |  |  |
| T09CO05101C0 |  | PT-09 ; Temporary Support erection from GND to L09 (Z-AB&AK-AM/17-20) (Common Zone) | 38d | 2011-02-10 A | 2011-02-27 A | SR8S105101C0 FF, SR8S105101C0, T09SA03301C0, T09SB03303C0 | 100% |  | 2011-03-07 | 2011-04-20 |  |  | Labor General [0.5 h]; Cost | T09CO05101C0 | 100 | Z2 | PT | C | 09 | CO | ST | 051 | 01 | PA | TRUS | D | A10 | EREC | GFLR | BILL 10 | B10 | S2 | 01 | R00 | ACF03 | 051 |  | ST |  |  |  |  |
| T09CO05109C0 |  | PT-09 ; Temporary support erection from L5 to L19 (AD-AH/17-20) (Common Zone) | 15d | 2011-02-19 A | 2011-03-17 A | DR5S103399C0 SS+12d, OGNMU00005S0, OGNMU00025S0 | 100% |  | 2011-03-08 | 2011-03-26 |  |  | Labor General [0.5 h]; Cost | T09CO05109C0 | 100 | Z2 | PT | C | 09 | CO | ST | 051 | 09 | PA | TRUS | D | A10 | EREC | 10FLR | BILL 10 | B10 | S2 | 01 | R00 | ACF03 | 051 |  | ST |  |  |  |  |
| T09CO05103C0 |  | PT-09 ; Alignment, Bolting & Welding (Common Zone) | 12d | 2011-03-16 A | 2011-06-28 A | T09CO05115C0 SS+10d, T09CO05115C0 FF | 100% |  | 2011-04-16 | 2011-04-30 |  |  | STRUCTURAL STEEL [2304 h]; Cost | T09CO05103C0 | 95 | Z2 | PT | C | 09 | CO | ST | 051 | 03 | PA | TRUS | D | A10 | EREC | 10FLR | BILL 10 | B10 | S2 | 02 | R00 | ACF03 | 051 |  | ST | 46376.99 |  |  |  |
| T09CO01011C0 |  | PT-09 ; Inspection (Common Zone) | 6d | 2011-04-16 A | 2011-06-13 A | T09CO05103C0 | 100% |  | 2011-04-30 | 2011-05-07 |  |  | Labor General [0.5 h]; Cost | T09CO01011C0 | 95 | Z2 | PT | C | 09 | CO | ST | 010 | 11 | PA | TRUS | D | A10 | EREC | 10FLR | BILL 10 | B10 | S2 | IN | R00 | ACF03 | 010 |  |  |  |  |  |  |
| T09CO05105C0 |  | PT-09 ; Deck sheet laying & stud welding (Common Zone) | 32d | 2011-04-27 A | 2011-06-02 A | OGNMU00009S0, T09CO01011C0 | 100% |  | 2011-05-07 | 2011-06-13 |  |  | STRUCTURAL STEEL [20736 h]; Cost | T09CO05105C0 | 95 | Z2 | PT | C | 09 | CO | ST | 053 | 05 | PA | TRUS | D | A10 | MDEC | 10FLR | BILL 10 | B10 | S2 | 03 | R00 | ACF03 | 053 |  | ST | 20030.2 |  |  |  |
| T09CO05113C0 |  | PT-09 ; Depropping/Dismantling of Supports (Option B) (Common Zone) | 37.12d | 2011-05-15 A | 2011-06-05 A | T09CO01011C0 | 100% |  | 2011-06-02 | 2011-07-17 |  |  | Labor General [304 h]; Cost | T09CO05113C0 | 90 | Z2 | PT | C | 09 | CO | ST | 051 | 13 | PA | TRUS | D | A10 | FIRE | 10FLR | BILL 10 | B10 | S2 | 01 | R00 | ACF03 | 051 |  | ST | 463767.14 |  |  |  |
| T09CO07807C0 |  | PT-09 ; Cementitious Fire Proofing Lvl 9 (Common Zone) | 25d | 2011-07-10 A | 2011-10-03 | T09CO05105C0, T09CO05113C0 FF, T10CO03399C0 | 90% | 2.5d | 2011-07-06 | 2011-08-03 | 23.1d | 0d | CEMENTITIOUS FIREPROOFING [6132 h]; CEMENTITIOUS FIREPROOFING [12264 m2]; Cost | T09CO07807C0 |  | Z2 | PT | C | 09 | CO | ST | 078 | 07 | PA | TRUS | D | A10 | FIRE | 10FLR | BILL 10 | B10 | S2 | 04 | R00 | ACF03 | 078 |  | ST |  | 90 |  |  |
| T09CO04409C0 |  | PT-09 ; Ceiling Bracket (Common Zone) | 8.88d | 2011-08-10 A | 2012-08-23 | T09CO07807C0, PGLS403392C0 FS+36d, PGLS503391C0 FS+36d, PGLS103391C140 FS+36d, DR5CO04405C0, PGLS703394R02 FS+36d, PGLS703394C0 FS+36d | 50% | 4.44d | 2012-10-09 | 2012-10-18 | 134.05d | 0d | FACADE STEEL GRILL [2345.1 h]; Cost | T09CO04409C0 |  |  | PT | C | 09 | CO | FA | 044 | 09 |  |  |  |  |  |  | BILL 10 | B10 | S2 | PAR | R00 | ACF05 | 044 |  | FA |  | 50 | 50 | 0 |
| T09CO04443C0 |  | PT-09 ; M2 Bracket (Common Zone) | 36d | 2011-09-05 A | 2012-02-08 | T09CO07807C0 FS+72d | 15% | 30.6d | 2011-12-01 | 2012-01-15 | 197.02d | 0d | FACADE METAL PANEL 2 [9764.3 h]; Cost | DR5CO04443C0 |  |  | PT | C | 09 | CO | FA | 044 | 43 |  |  |  |  |  |  | BILL 10 | B10 | S2 | FM2 | R00 | ACF05 | 044 |  | FA |  |  |  |  |
| T09CO04445C0 |  | PT-09 ; M2 Transom & Mullion (Common Zone) | 48d | 2012-01-02 | 2012-02-28 | T09CO04443C0 SS+18d |  |  |  |  | 273.5d | 0d | FACADE METAL PANEL 2 [39055.5 h]; Cost | DR5CO04445C0 |  |  | PT | C | 09 | CO | FA | 044 | 45 |  |  |  |  |  |  | BILL 10 | B10 | S2 | FM2 | R00 | ACF05 | 044 |  | FA |  |  |  |  |
| T09CO04447C0 |  | PT-09 ; M2 Metal Panel (Common Zone) | 58d | 2012-01-30 | 2012-04-08 | T09CO04445C0 SS+24d, T09BM110B2C0 FF |  |  |  |  | 273.5d | 264.5d | FACADE METAL PANEL 2 [16273.1 h]; Cost | DR5CO04447C0 |  |  | PT | C | 09 | CO | FA | 044 | 47 |  |  |  |  |  |  | BILL 10 | B10 | S2 | FM2 | R00 | ACF05 | 044 |  | FA |  |  |  |  |
| T09CO04403C0 |  | PT-09 ; Louvers Bracket (Common Zone) | 9d | 2012-02-08 | 2012-02-19 | T09CO07807C0, T09CO04443C0 |  |  |  |  | 197.02d | 0d | FACADE STEEL GRILL [772.1 h]; Cost | T09CO04403C0 |  |  | PT | C | 09 | CO | FA | 044 | 03 |  |  |  |  |  |  | BILL 10 | B10 | S2 | FSL | R00 | ACF05 | 044 |  | FA |  |  |  |  |
| T09CO04406C0 |  | PT-09 ; Louvers transom & mullion (Common Zone) | 12d | 2012-02-19 | 2012-03-04 | T09CO04403C0 |  |  |  |  | 197.02d | 0d | FACADE STEEL GRILL [3088.1 h]; Cost | T09CO04406C0 |  |  | PT | C | 09 | CO | FA | 044 | 06 |  |  |  |  |  |  | BILL 10 | B10 | S2 | FSL | R00 | ACF05 | 044 |  | FA |  |  |  |  |
| T09CO04405C0 |  | PT-09 ; Louvers Panel installation (Common Zone) | 12.01d | 2012-03-04 | 2012-03-18 | T09CO04406C0 |  |  |  |  | 197.02d | 0d | FACADE LOUVER & GRILL [2395.9 h]; FACADE LOUVER & GRILL [875 m2]; FACADE TOTAL QUANTITY m2 [875 m2]; Cost | T09CO04405C0 |  |  | PT | C | 09 | CO | FA | 044 | 05 |  |  |  |  |  |  | BILL 10 | B10 | S2 | FSL | R00 | ACF05 | 044 |  | FA |  |  |  |  |
| T09CO04415C0 |  | PT-09 ; PSG Steel grill transom & mullion (Common Zone) | 12d | 2012-03-18 | 2012-04-01 | T09CO04403C0, T09CO04405C0 |  |  |  |  | 210.89d | 0d | FACADE STEEL GRILL [3944.1 h]; Cost | I05CO04415C0 |  |  | PT | C | 09 | CO | FA | 044 | 15 |  |  |  |  |  |  | BILL 8 | B10 | S2 | PSG | R00 | ACF05 | 044 |  | FA |  |  |  |  |
| T09CO04412C0 |  | PT-09 ; PSG Steel grill (Common Zone) | 12d | 2012-04-01 | 2012-04-15 | T09CO04415C0 |  |  |  |  | 210.89d | 0d | FACADE STEEL GRILL [1643.6 h]; Cost | I05CO04411C0 |  |  | PT | C | 09 | CO | FA | 044 | 11 |  |  |  |  |  |  | BILL 8 | B10 | S2 | PSG | R00 | ACF05 | 044 |  | FA |  |  |  |  |
| T09CO04413C0 |  | PT-09 ; PSG Steel grill Bracket (Common Zone) | 9d | 2012-04-01 | 2012-04-11 | T09CO04412C0 SS |  |  |  |  | 213.89d | 179.14d | FACADE STEEL GRILL [986.1 h]; Cost | I05CO04407C0 |  |  | PT | C | 09 | CO | FA | 044 | 07 |  |  |  |  |  |  | BILL 8 | B10 | S2 | PSG | R00 | ACF05 | 044 |  | FA |  |  |  |  |
| T09CO04408C0 |  | PT-09 ; Ceiling Rockwool transom & mullion (Common Zone) | 12d | 2012-08-23 | 2012-09-06 | T09CO04409C0 |  |  |  |  | 134.05d | 0d | FACADE STEEL GRILL [4690.7 h]; Cost | T09CO04408C0 |  |  | PT | C | 09 | CO | FA | 044 | 08 |  |  |  |  |  |  | BILL 10 | B10 | S2 | PAR | R00 | ACF05 | 044 |  | FA |  |  |  |  |
| T09CO04407C0 |  | PT-09 ; Ceiling Rockwool &panel (Common Zone) | 12d | 2012-09-06 | 2012-09-20 | T09CO04408C0 |  |  |  |  | 134.05d | 125.05d | FACADE STEEL GRILL [781.9 h]; Cost | T09CO04407C0 |  |  | PT | C | 09 | CO | FA | 044 | 07 |  |  |  |  |  |  | BILL 10 | B10 | S2 | PAR | R00 | ACF05 | 044 |  | FA |  |  |  |  |

| ID | WBS | Activity | Duration | Start | Finish | Predecessors | Complete | Remaining | Planned start | Planned finish | Total float | Free float | Resources | Cost | Actual cost | user_number8 | user_integer1 | user_integer2 | user_number7 | change id | U% | CCAD BUILDING(SET) | CCAD PHASE(SET) | CCAD FLOOR(SET) | CCAD ZONE(SET) | CCAD WORK(SET) | CCAD SECTION(SET) | CCAD SERIAL No.(SET) | CCAD SUB ZONE MEP(SET) | CCAD CBS(SET) | CCAD BILL(SET) | CCAD HANDOVER(SET) | CCAD TAG(SET) | CCAD REV(SET) | CCADACF (SET) | CCAD CSA | CCAD SSCF | Act Selector % | CCAD MEQ | Change Order # | NEW ACTIVITY ID | CCAD DIVISION(SET) |
| --- | --- | --- | --- | --- | --- | --- | --- | --- | --- | --- | --- | --- | --- | --- | --- | --- | --- | --- | --- | --- | --- | --- | --- | --- | --- | --- | --- | --- | --- | --- | --- | --- | --- | --- | --- | --- | --- | --- | --- | --- | --- | --- |
|  | 02 | **Mech-1** |  | 2011-06-15 | 2012-12-10 |  |  |  |  |  |  |  |  |  |  |  |  |  |  |  |  |  |  |  |  |  |  |  |  |  |  |  |  |  |  |  |  |  |  |  |  |  |
| T09M123001C0 |  | PT-09 ; 1st Fix, Inst. of Supports for MEP (Mech RM) | 30d | 2011-06-15 A | 2011-10-31 | T09CO07807C0 | 20% | 24d | 2011-08-01 | 2011-09-06 | 24.75d | 0d | MECHANICAL [800.4 h]; Cost [45150.4 AED] | 45,150.38 | 9,030.08 | 0 | 0 | 0 | 0 | T09ME23001C0 | 15 | PT | C | 09 | M1 | ME | 230 | 01 | 1S | BILL 10 | B10 | S2 | 1F | R00 | ACF04 | MEP | 230 | M1F |  |  |  |  |
| T09M126001C0 |  | PT-09 ; 1st Fix, Inst of Trunking/Conduiting (Mech RM) | 30d | 2011-06-21 A | 2011-11-01 | T09M123001C0 SS | 15% | 25.5d | 2011-09-07 | 2011-10-11 | 48.75d | 24d | ELECTRICAL [734.4 h]; Cost [37790.1 AED] | 37,790.1 | 5,668.51 |  |  |  |  | T09ME26001C0 |  | PT | C | 09 | M1 | ME | 260 | 01 | 1S | BILL 10 | B10 | S2 | 1F | R00 | ACF04 | MEP | 260 | M1F |  |  |  |  |
| T09M109201C0 |  | PT-09 ; Metal Studs (Mech RM) | 30d | 2011-07-10 A | 2011-11-03 | T09M123001C0 SS, T09M123001C0 FF | 10% | 27d | 2011-09-08 | 2011-10-13 | 44.75d | 0d | PARTITIONS [1848 h]; PARTITIONS - Metal Studs [256 m]; Cost |  |  |  |  |  |  | T09ME09201C0 |  | PT | C | 09 | M1 | PT | 092 | 01 |  | BILL 10 | B10 | S2 | 1F | R00 | ACF06 | GP | 092 | PMS |  |  |  |  |
| T09M121123C0 |  | PT-09 ; Final Fix, Inst of Fire Extinguishers/FHC (Mech RM) | 42d | 2011-09-05 A | 2012-04-19 | T09M109205C0 | 15% | 35.7d | 2012-02-11 | 2012-03-29 | 197.05d | 162.3d | MECHANICAL [3681.6 h]; Cost [190080 AED] | 190,080.43 | 28,512.06 |  |  |  |  | T09ME21123C0 | 0 | PT | C | 09 | M1 | ME | 211 | 23 | FF | BILL 10 | B10 | S2 | FF | R00 | ACF07 | MEP | 211 |  |  |  |  |  |
| T09M123013C0 |  | PT-09 ; 2nd Fix, Inst of Equipment (AHU) (Mech RM) | 72d | 2011-10-26 | 2012-01-25 | T09CO07807C0, T09M109201C0 SS, T09M122006C0 FF, T09M122011C0 FF |  |  |  |  | 24.75d | 0d | MECHANICAL [16904.4 h]; Cost |  |  |  |  |  |  | T09ME23013C0 |  | PT | C | 09 | M1 | ME | 230 | 13 | 2n | BILL 10 | B10 | S2 | 2F | R00 | ACF04 | MEP | 230 |  | H |  |  |  |
| T09M122011C0 |  | PT-09 ; 1st Fix, Inst of Drainage pipe (Mech RM) | 48d | 2011-10-31 | 2012-01-02 | T09M123001C0, T09M126001C0 SS+10d |  |  |  |  | 24.75d | 0d | PLUMBING [1378.8 h]; Cost |  |  |  |  |  |  | T09ME22011C0 |  | PT | C | 09 | M1 | ME | 220 | 11 | 1S | BILL 10 | B10 | S2 | 1F | R00 | ACF04 | MEP | 220 | M1F |  |  |  |  |
| T09M109203C0 |  | PT-09 ; Partitions 1st face (Mech RM) | 32.88d | 2011-11-03 | 2011-12-18 | OGNMU00015S0, T09M109201C0 |  |  |  |  | 170.63d | 32.12d | PARTITIONS [256 m]; PARTITIONS [1451 h]; Cost |  |  |  |  |  |  | T09ME09203C0 |  | PT | C | 09 | M1 | PT | 092 | 03 |  | BILL 10 | B10 | S2 | 2F | R00 | ACF06 | GP | 092 | P1F |  | 314 | 1463 |  |
| T09M122006C0 |  | PT-09 ; 1st Fix, Inst of Water supply pipe (Mech RM) | 60d | 2011-11-13 | 2012-01-25 | T09M122011C0 SS+8d, T09M123001C0 |  |  |  |  | 24.75d | 0d | PLUMBING [4548 h]; Cost |  |  |  |  |  |  | T09ME22006C0 |  | PT | C | 09 | M1 | ME | 220 | 06 | 1S | BILL 10 | B10 | S2 | 1F | R00 | ACF04 | MEP | 220 | M1F |  |  |  |  |
| T09M121111C0 |  | PT-09 ; 1st Fix, Inst of Sprinkler main pipe (Mech RM) | 48d | 2011-11-30 | 2012-01-28 | T09M122006C0 SS+14d, T09M123001C0 |  |  |  |  | 126.75d | 0d | MECHANICAL [853.2 h]; Cost |  |  |  |  |  |  | T09ME21111C0 |  | PT | C | 09 | M1 | ME | 211 | 11 | 1S | BILL 10 | B10 | S2 | 1F | R00 | ACF04 | MEP | 211 | M1F |  |  |  |  |
| T09M123019C0 |  | PT-09 ; 1st Fix, Inst of CHW pipe (Mech RM) | 54d | 2011-12-18 | 2012-02-21 | T09M121111C0 SS+14d, T09M123001C0 |  |  |  |  | 126.75d | 0d | MECHANICAL [2467.2 h]; Cost |  |  |  |  |  |  | T09ME23019C0 |  | PT | C | 09 | M1 | ME | 230 | 19 | 1S | BILL 10 | B10 | S2 | 1F | R00 | ACF04 | MEP | 230 | M1F |  |  |  |  |
| T09M108101C0 |  | PT-09 ; Metal Door Frames (Mech RM) | 18d | 2012-01-02 | 2012-01-22 | OGNMU00027S0, T09M109201C0, GNHE08101C0 FS+126d, T09PA08103C0 SS+3d |  |  |  |  | 147d | 0d | METAL DOORS [140 h]; Cost |  |  |  |  |  |  | T09ME08101C0 |  | PT | C | 09 | M1 | DO | 081 | 01 |  | BILL 10 | B10 | S2 | DF | R00 | ACF06 |  | 081 |  |  | 316 | 1465 | 08 |
| T09M107101C0 |  | PT-09 ; Waterproofing (Mech RM) | 15d | 2012-01-25 | 2012-02-13 | T09M123013C0 |  |  |  |  | 159.5d | 21d | THERMAL & MOISTURE [328 h]; THERMAL & MOISTURE [2168 m2]; Cost |  |  |  |  |  |  | I05ME09901C0 |  | PT | C | 09 | M1 | FF | 071 | 01 |  | BILL 10 | B10 | S2 | 01 | R00 | ACF03 |  | 071 |  |  | 328 | 1469 |  |
| T09M109205C0 |  | PT-09 ; Partitions Closing (Mech RM) | 36d | 2012-01-25 | 2012-03-08 | T09M109201C0, T09M109203C0, T09M122006C0, T09M122011C0, TAFOA09214C1 FF, T09M108101C0 FF, TV080910201R2 |  |  |  |  | 138.5d | 0d | PARTITIONS [256 m]; PARTITIONS [1863 h]; Cost |  |  |  |  |  |  | T09ME09205C0 |  | PT | C | 09 | M1 | PT | 092 | 05 |  | BILL 10 | B10 | S2 | FF | R00 | ACF06 | GP | 092 | P2F |  | 315 | 1464 |  |
| T09M123005C0 |  | PT-09 ; 1st Fix, Inst of Ducting (Mech RM) | 60d | 2012-01-25 | 2012-04-05 | T09M123001C0, T09M123013C0 |  |  |  |  | 34.75d | 0d | MECHANICAL [8022 h]; Cost |  |  |  |  |  |  | T09ME23005C0 |  | PT | C | 09 | M1 | ME | 230 | 05 | 1S | BILL 10 | B10 | S2 | 1F | R00 | ACF04 | MEP | 230 | M1F |  |  |  |  |
| T09M123011C0 |  | PT-09 ; 2nd Fix, Inst of Equipment (FCU,FAN,PUMP) (Mech RM) | 78d | 2012-01-25 | 2012-04-26 | T09M123013C0 |  |  |  |  | 106.75d | 0d | MECHANICAL [5396.4 h]; Cost |  |  |  |  |  |  | T09ME23011C0 |  | PT | C | 09 | M1 | ME | 230 | 11 | 2n | BILL 10 | B10 | S2 | 2F | R00 | ACF04 | MEP | 230 |  | H |  |  |  |
| T09M126009C0 |  | PT-09 ; 2nd Fix, Inst of Equipment (DB, TR, SG) (Mech RM) | 90d | 2012-01-25 | 2012-05-10 | T09M123013C0 |  |  |  |  | 124.75d | 66d | ELECTRICAL [2133.6 h]; Cost |  |  |  |  |  |  | T09ME26009C0 |  | PT | C | 09 | M1 | ME | 260 | 09 | 2n | BILL 10 | B10 | S2 | 2F | R00 | ACF04 | MEP | 260 |  | E |  |  |  |
| T09M126011C0 |  | PT-09 ; 1st Fix, Inst of Cable Tray (Mech RM) | 48d | 2012-01-25 | 2012-03-22 | T09M123013C0 |  |  |  |  | 94.75d | 0d | ELECTRICAL [399.6 h]; Cost |  |  |  |  |  |  | T09ME26011C0 |  | PT | C | 09 | M1 | ME | 260 | 11 | 1S | BILL 10 | B10 | S2 | 1F | R00 | ACF04 | MEP | 260 | M1F |  |  |  |  |
| T09M127020C0 |  | PT-09 ; 2nd Fix, Inst of ELV Equipment (Panels) (Mech RM) | 66d | 2012-01-25 | 2012-04-12 | T09M123013C0 |  |  |  |  | 148.75d | 54d | ELECTRICAL [1819.2 h]; Cost |  |  |  |  |  |  | T09ME27020C0 |  | PT | C | 09 | M1 | ME | 270 | 20 | 2n | BILL 10 | B10 | S2 | 2F | R00 | ACF04 | MEP | 270 |  | E |  |  |  |
| T09M121119C0 |  | PT-09 ; 1st Fix, Inst of Sprinkler branch pipe (Mech RM) | 48d | 2012-01-28 | 2012-03-25 | T09M121111C0 |  |  |  |  | 140.75d | 0d | MECHANICAL [561.6 h]; Cost |  |  |  |  |  |  | T09ME21119C0 |  | PT | C | 09 | M1 | ME | 211 | 19 | 1S | BILL 10 | B10 | S2 | 1F | R00 | ACF04 | MEP | 211 | M1F |  |  |  |  |
| T09M121117C0 |  | PT-09 ; 2nd Fix, Inst of Zone Control Valve (Mech RM) | 42d | 2012-02-21 | 2012-04-10 | T09M123013C0, T09M123019C0 |  |  |  |  | 150.75d | 92d | MECHANICAL [832.8 h]; Cost |  |  |  |  |  |  | T09ME21117C0 |  | PT | C | 09 | M1 | ME | 211 | 17 | 2n | BILL 10 | B10 | S2 | 2F | R00 | ACF07 | MEP | 211 |  |  |  |  |  |
| T09M109601C0 |  | PT-09 ; Floor Finishes (Mech RM) | 33.88d | 2012-03-08 | 2012-04-17 | T09M107101C0, T09M109205C0 |  |  |  |  | 138.5d | 0d | ASSORTED FLOOR FINISH [13160 h]; ASSORTED FLOOR FINISH [7308 m2]; Cost |  |  |  |  |  |  | T09ME09601C0 |  | PT | C | 09 | M1 | FF | 096 | 01 |  | BILL 10 | B10 | S2 | 01 | R00 | ACF06 |  | FF |  |  | 326 | 1501 |  |
| T09M109901C0 |  | PT-09 ; Wall Prime & 1st coat (Mech RM) | 24d | 2012-03-08 | 2012-04-05 | OGNMU00057S0, T09M109205C0 |  |  |  |  | 148.38d | 0d | WALL PAINT [372 h]; WALL PAINT [464 m2]; Cost |  |  |  |  |  |  | T09ME09901C0 |  | PT | C | 09 | M1 | PA | 099 | 01 |  | BILL 10 | B10 | S2 | 01 | R00 | ACF06 |  | 099 |  |  | 328 | 1469 |  |
| T09M126015C0 |  | PT-09 ; Final Fix, Inst of Ceiling rose (Mech RM) | 36d | 2012-03-08 | 2012-04-19 | T09M109205C0 |  |  |  |  | 196.75d | 162d | ELECTRICAL [61.2 h]; Cost |  |  |  |  |  |  | T09ME26015C0 |  | PT | C | 09 | M1 | ME | 260 | 15 | FF | BILL 10 | B10 | S2 | FF | R00 | ACF07 | MEP | 260 |  |  |  |  |  |
| T09M126007C0 |  | PT-09 ; 2nd Fix, Cable Pulling (Mech RM) | 48d | 2012-03-22 | 2012-05-17 | T09M126011C0 |  |  |  |  | 94.75d | 60d | ELECTRICAL [2683.2 h]; Cost |  |  |  |  |  |  | T09ME26007C0 |  | PT | C | 09 | M1 | ME | 260 | 07 | 2n | BILL 10 | B10 | S2 | 2F | R00 | ACF07 | MEP | 260 |  |  |  |  |  |
| T09M121115C0 |  | PT-09 ; 2nd Fix, Inst of Sprinkler droppers (Mech RM) | 42d | 2012-03-25 | 2012-05-13 | T09M109205C0, T09M121119C0 |  |  |  |  | 140.75d | 0d | MECHANICAL [1602 h]; Cost |  |  |  |  |  |  | T09ME21115C0 |  | PT | C | 09 | M1 | ME | 211 | 15 | 2n | BILL 10 | B10 | S2 | 2F | R00 | ACF07 | MEP | 211 |  |  |  |  |  |
| T09M109903C0 |  | PT-09 ; Wall - Final Paint (Mech RM) | 24d | 2012-04-05 | 2012-05-03 | T09M109901C0 |  |  |  |  | 166.75d | 0d | WALL PAINT [201 h]; WALL PAINT [250 m2]; Cost |  |  |  |  |  |  | T09ME09903C0 |  | PT | C | 09 | M1 | PA | 099 | 03 |  | BILL 10 | B10 | S2 | 02 | R00 | ACF06 |  | 099 |  |  | 329 | 1470 |  |
| T09M123015C0 |  | PT-09 ; 2nd Fix, Inst of VCD's/FD's (Mech RM) | 42d | 2012-04-05 | 2012-05-24 | T09M123005C0 |  |  |  |  | 94.75d | 6d | MECHANICAL [1753.2 h]; Cost |  |  |  |  |  |  | T09ME23015C0 |  | PT | C | 09 | M1 | ME | 230 | 15 | 2n | BILL 10 | B10 | S2 | 2F | R00 | ACF07 | MEP | 230 |  |  |  |  |  |
| T09M123017C0 |  | PT-09 ; 2nd Fix, Insulation of CHW pipe & Duct (Mech RM) | 48d | 2012-04-05 | 2012-05-31 | T09M123005C0, T09M123019C0 |  |  |  |  | 88.75d | 0d | MECHANICAL [3064.8 h]; Cost |  |  |  |  |  |  | T09ME23017C0 |  | PT | C | 09 | M1 | ME | 230 | 17 | 2n | BILL 10 | B10 | S2 | 2F | R00 | ACF07 | MEP | 230 |  |  |  |  |  |
| T09M126019C0 |  | PT-09 ; Final Fix, Inst of Light fittings (Mech RM) | 48d | 2012-04-05 | 2012-05-31 | T09M109901C0 |  |  |  |  | 160.75d | 126d | ELECTRICAL [7815.6 h]; Cost |  |  |  |  |  |  | T09ME26019C0 |  | PT | C | 09 | M1 | ME | 260 | 19 | FF | BILL 10 | B10 | S2 | FF | R00 | ACF07 | MEP | 260 |  |  |  |  |  |
| T09M127010C0 |  | PT-09 ; 1st Fix, Inst of Trunking for ELV system (Mech RM) | 48d | 2012-04-05 | 2012-05-31 | T09M123005C0 |  |  |  |  | 34.75d | 0d | ELECTRICAL [1512 h]; Cost |  |  |  |  |  |  | T09ME27010C0 |  | PT | C | 09 | M1 | ME | 270 | 10 | 1S | BILL 10 | B10 | S2 | 1F | R00 | ACF04 | MEP | 270 | M1F |  |  |  |  |
| T09M108105C0 |  | PT-09 ; Metal Doors (Mech RM) | 22d | 2012-04-17 | 2012-05-13 | T09M108101C0, T09M109601C0, T09M109901C0 |  |  |  |  | 138.5d | 0d | METAL DOORS [580 h]; METAL DOORS [58 no]; Cost |  |  |  |  |  |  | T09ME08105C0 |  | PT | C | 09 | M1 | DO | 081 | 05 |  | BILL 10 | B10 | S2 | DR | R00 | ACF06 |  | 081 |  |  | 317 | 1466 | 08 |
| T09M123009C0 |  | PT-09 ; 2nd Fix, Inst of VAV'S CHW connection (Mech RM) | 42d | 2012-04-26 | 2012-06-14 | T09M123011C0 |  |  |  |  | 106.75d | 0d | MECHANICAL [1450.8 h]; Cost |  |  |  |  |  |  | T09ME23009C0 |  | PT | C | 09 | M1 | ME | 230 | 09 | 2n | BILL 10 | B10 | S2 | 2F | R00 | ACF07 | MEP | 230 |  |  |  |  |  |
| T09M122003C0 |  | PT-09 ; Final Fix, Inst of All drain (Mech RM) | 18d | 2012-05-03 | 2012-05-24 | T09M109601C0, T09M109903C0 |  |  |  |  | 166.75d | 132d | PLUMBING [1378.8 h]; Cost |  |  |  |  |  |  | T09ME22003C0 |  | PT | C | 09 | M1 | ME | 220 | 03 | FF | BILL 10 | B10 | S2 | FF | R00 | ACF07 | MEP | 220 |  |  |  |  |  |
| T09M126017C0 |  | PT-09 ; Final Fix, Inst of Switch/Sockets (Mech RM) | 12d | 2012-05-03 | 2012-05-17 | T09M109901C0, T09M109903C0 |  |  |  |  | 172.75d | 138d | ELECTRICAL [362.4 h]; Cost |  |  |  |  |  |  | T09ME26017C0 |  | PT | C | 09 | M1 | ME | 260 | 17 | FF | BILL 10 | B10 | S2 | FF | R00 | ACF07 | MEP | 260 |  |  |  |  |  |
| T09M108709C0 |  | PT-09 ; Ironmongery (Mech RM) | 30d | 2012-05-13 | 2012-06-18 | OGNMU00059S0, T09M108105C0 |  |  |  |  | 156.63d | 121.88d | IRONMONGERY [550 h]; IRONMONGERY [55 no]; Cost |  |  |  |  |  |  | T09ME08709C0 |  | PT | C | 09 | M1 | DO | 087 | 09 |  | BILL 10 | B10 | S2 | IM | R00 | ACF06 |  | 087 |  |  | 322 | 1467 | 08 |
| T09M121121C0 |  | PT-09 ; Final Fix, Inst of Sprinklers head (Mech RM) | 36d | 2012-05-13 | 2012-06-25 | T09M121115C0 |  |  |  |  | 140.75d | 106d | MECHANICAL [234 h]; Cost |  |  |  |  |  |  | T09ME21121C0 |  | PT | C | 09 | M1 | ME | 211 | 21 | FF | BILL 10 | B10 | S2 | FF | R00 | ACF07 | MEP | 211 |  |  |  |  |  |
| T09M123023C0 |  | PT-09 ; Final Fix, Inst of Flexible Duct & Plenum boxes (Mech RM) | 36d | 2012-05-31 | 2012-07-14 | T09M123015C0, T09M123017C0 |  |  |  |  | 88.75d | 0d | MECHANICAL [30 h]; Cost |  |  |  |  |  |  | T09ME23023C0 |  | PT | C | 09 | M1 | ME | 230 | 23 | FF | BILL 10 | B10 | S2 | FF | R00 | ACF07 | MEP | 230 |  |  |  |  |  |
| T09M127001C0 |  | PT-09 ; 1st Fix, Wiring/ Cabling work (Mech RM) | 48d | 2012-05-31 | 2012-07-28 | T09M126001C0, T09M126011C0, T09M127010C0 |  |  |  |  | 34.75d | 0d | ELECTRICAL [211.2 h]; Cost |  |  |  |  |  |  | T09ME27001C0 |  | PT | C | 09 | M1 | ME | 270 | 01 | 1S | BILL 10 | B10 | S2 | 1F | R00 | ACF04 | MEP | 270 | M1F |  |  |  |  |
| T09M127030C0 |  | PT-09 ; Final Fix, Inst of ELV device (Detector/Speaker) (Mech RM) | 42d | 2012-06-14 | 2012-08-04 | T09M109901C0, T09M123009C0, T09M127020C0 |  |  |  |  | 106.75d | 72d | ELECTRICAL [3571.2 h]; Cost |  |  |  |  |  |  | T09ME27030C0 |  | PT | C | 09 | M1 | ME | 270 | 30 | FF | BILL 10 | B10 | S2 | FF | R00 | ACF07 | MEP | 270 |  |  |  |  |  |
| T09M123021C0 |  | PT-09 ; Final Fix, Inst of Grilles & Diffusers (Mech RM) | 36d | 2012-07-14 | 2012-08-27 | T09M123023C0 |  |  |  |  | 88.75d | 54d | MECHANICAL [1498.8 h]; Cost |  |  |  |  |  |  | T09ME23021C0 |  | PT | C | 09 | M1 | ME | 230 | 21 | FF | BILL 10 | B10 | S2 | FF | R00 | ACF07 | MEP | 230 |  |  |  |  |  |
| T09M126005C0 |  | PT-09 ; 2nd Fix, Wiring for Power/Lighting/Emergency (Mech RM) | 42d | 2012-07-28 | 2012-09-17 | T09M126001C0, T09M126007C0, T09M126011C0, T09M127001C0, T09M127010C0 |  |  |  |  | 34.75d | 0d | ELECTRICAL [392.4 h]; Cost |  |  |  |  |  |  | T09ME26005C0 |  | PT | C | 09 | M1 | ME | 260 | 05 | 2n | BILL 10 | B10 | S2 | 2F | R00 | ACF07 | MEP | 260 |  |  |  |  |  |
| T09M127003C0 |  | PT-09 ; Final Fix, BMS connection work to Equipment (Mech RM) | 54d | 2012-07-28 | 2012-10-01 | T09M121117C0, T09M123011C0, T09M123013C0, T09M123015C0, T09M126009C0, T09M127001C0, T09M127020C0 |  |  |  |  | 58.75d | 24d | ELECTRICAL [29564.4 h]; Cost |  |  |  |  |  |  | T09ME27003C0 |  | PT | C | 09 | M1 | ME | 270 | 03 | FF | BILL 10 | B10 | S2 | FF | R00 | ACF07 | MEP | 270 |  |  |  |  |  |
| T09M126013C0 |  | PT-09 ; Final Fix, Termination & Gladding of Cables (Mech RM) | 36d | 2012-09-17 | 2012-10-31 | T09M109205C0, T09M126005C0 |  |  |  |  | 34.75d | 0d | ELECTRICAL [148.8 h]; Cost |  |  |  |  |  |  | T09ME26013C0 |  | PT | C | 09 | M1 | ME | 260 | 13 | FF | BILL 10 | B10 | S2 | FF | R00 | ACF07 | MEP | 260 |  |  |  |  |  |

| ID | WBS | Activity | Duration | Start | Finish | Predecessors | Complete | Remaining | Planned start | Planned finish | Total float | Free float | Resources | Cost | Actual cost | change id | CCAD BUILDING(SET) | CCAD PHASE(SET) | CCAD FLOOR(SET) | CCAD ZONE(SET) | CCAD WORK(SET) | CCAD SECTION(SET) | CCAD SERIAL No.(SET) | CCAD CBS(SET) | CCAD BILL(SET) | CCAD HANDOVER(SET) | CCAD TAG(SET) | CCAD REV(SET) | CCADACF (SET) | CCAD SSCF | CCAD SUB ZONE MEP(SET) | CCAD CSA | Act Selector % | U% | CCAD MEQ | Change Order # | NEW ACTIVITY ID | CCAD DIVISION(SET) |
| --- | --- | --- | --- | --- | --- | --- | --- | --- | --- | --- | --- | --- | --- | --- | --- | --- | --- | --- | --- | --- | --- | --- | --- | --- | --- | --- | --- | --- | --- | --- | --- | --- | --- | --- | --- | --- | --- | --- |
|  | 10 | **Precommissioning Tesing & snagging (Mech-1)** |  | 2012-10-31 | 2012-12-10 |  |  |  |  |  |  |  |  |  |  |  |  |  |  |  |  |  |  |  |  |  |  |  |  |  |  |  |  |  |  |  |  |  |
| T09TS01801C0 |  | PT-09 ; MEP de-snag, FIREM sign-off | 9.75d | 2012-10-31 | 2012-11-12 | T09M121123C0, T09M126015C0, T09M126017C0, T09M126019C0, T09M122003C0, T09M127030C0, T09M121121C0, T09M123023C0, T09M127003C0, T09M123021C0, T09M126013C0 |  |  |  |  | 34.75d | 0d | TESTING & COMMISSIONING [2040 h]; Cost |  |  | T09TS01801C0 | PT | C | 09 | TS | SC | 018 | 01 | BILL 10 | B10 | S2 | 01 | R00 | ACF07 | 018 |  |  |  |  |  |  |  |  |
| T09TS01804C0 |  | PT-09 ; Touch-up & Clean / JV inspection /CIR /De-snag | 15d | 2012-11-12 | 2012-12-01 | T09M108709C0, T09M109601C0, T09M109903C0, T09TS01801C0, T09CO04412C0, T09CO04413C0 |  |  |  |  | 34.75d | 0d | TESTING & COMMISSIONING [128 h]; Cost |  |  | T09TS01802C0 | PT | C | 09 | TS | SC | 018 | 02 | BILL 10 | B10 | S2 | 02 | R00 | ACF07 | 018 |  |  |  |  |  |  |  |  |
| T09TS01807C0 |  | PT-09 ; Consultant's final de-snag inspection | 7d | 2012-12-01 | 2012-12-10 | T09TS01804C0 |  |  |  |  | 34.75d | 0d | Labor General [0.5 h]; Cost |  |  | T09TS01803C0 | PT | C | 09 | TS | SC | 018 | 03 | BILL 10 | B10 | S2 | 03 | R00 | ACF07 | 018 |  |  |  |  |  |  |  |  |
|  | 03 | **Mech-2** |  | 2011-06-22 | 2012-12-18 |  |  |  |  |  |  |  |  |  |  |  |  |  |  |  |  |  |  |  |  |  |  |  |  |  |  |  |  |  |  |  |  |  |
| T09M226001C0 |  | PT-09 ; 1st Fix, Inst of Trunking/Conduiting (Mech RM-2) | 30d | 2011-06-22 A | 2011-11-05 | T09M223001C0 SS | 5% | 28.5d | 2011-09-07 | 2011-10-11 | 74.38d | 25.5d | ELECTRICAL [734.4 h]; Cost [37790.1 AED] | 37,790.1 | 1,889.5 | T09M226001C0 | PT | C | 09 | M2 | ME | 260 | 01 | BILL 10 | B10 | S2 | 1F | R00 | ACF04 | 260 | 1S | MEP | M1F |  |  |  |  |  |
| T09M209201C0 |  | PT-09 ; Metal Studs (Mech RM-2) | 30d | 2011-07-06 A | 2011-11-03 | T09M223001C0 FF, T09M223001C0 SS | 10% | 27d | 2011-09-19 | 2011-10-23 | 38.38d | 0d | PARTITIONS [1646 h]; PARTITIONS - Metal Studs [228 m]; Cost |  |  | T09M209201C0 | PT | C | 09 | M2 | PT | 092 | 01 | BILL 10 | B10 | S2 | 1F | R00 | ACF06 | 092 |  | GP | PMS |  |  |  |  |  |
| T09M223001C0 |  | PT-09 ; 1st Fix, Inst. of Supports for MEP (Mech RM-2) | 30d | 2011-08-01 A | 2011-11-01 | T09CO07807C0 | 15% | 25.5d | 2011-08-01 | 2011-09-06 | 38.38d | 0d | MECHANICAL [4027.2 h]; Cost [45150.4 AED] | 45,150.38 | 6,772.56 | T09M223001C0 | PT | C | 09 | M2 | ME | 230 | 01 | BILL 10 | B10 | S2 | 1F | R00 | ACF04 | 230 | 1S | MEP | M1F |  |  |  |  |  |
| T09M221123C0 |  | PT-09 ; Final Fix, Inst of Fire Extinguishers/FHC (Mech RM-2) | 42d | 2011-09-05 A | 2012-04-23 | T09M209205C0 | 15% | 35.7d | 2012-02-13 | 2012-04-02 | 195.05d | 156.68d | MECHANICAL [3681.6 h]; Cost [190080 AED] | 190,080.43 | 28,512.06 | T09M221123C0 | PT | C | 09 | M2 | ME | 211 | 23 | BILL 10 | B10 | S2 | FF | R00 | ACF07 | 211 | FF | MEP |  | 0 |  |  |  |  |
| T09M223011C0 |  | PT-09 ; 2nd Fix, Inst of Equipment (FCU,FAN,PUMP) (Mech RM-2) | 90d | 2011-09-05 A | 2012-04-17 | T09M223013C0 | 20% | 72d | 2011-12-24 | 2012-04-09 | 116.38d | 0d | MECHANICAL [5396.4 h]; Cost [1227951 AED] | 1,227,950.54 | 245,590.11 | T09M223011C0 | PT | C | 09 | M2 | ME | 230 | 11 | BILL 10 | B10 | S2 | 2F | R00 | ACF04 | 230 | 2n | MEP |  | 0 | H |  |  |  |
| T09M223013C0 |  | PT-09 ; 2nd Fix, Inst of Equipment (AHU) (Mech RM-2) | 90d | 2011-10-03 | 2012-01-23 | T09CO07807C0, T09M209201C0 SS, T09M222011C0 FF |  |  |  |  | 38.38d | 0d | MECHANICAL [32556 h]; Cost |  |  | T09M223013C0 | PT | C | 09 | M2 | ME | 230 | 13 | BILL 10 | B10 | S2 | 2F | R00 | ACF04 | 230 | 2n | MEP |  |  | H |  |  |  |
| T09M222011C0 |  | PT-09 ; 1st Fix, Inst of Drainage pipe (Mech RM-2) | 54d | 2011-11-02 | 2012-01-10 | T09M223001C0, T09M226001C0 SS+14d |  |  |  |  | 48.88d | 0d | PLUMBING [2326.8 h]; Cost |  |  | T09M222011C0 | PT | C | 09 | M2 | ME | 220 | 11 | BILL 10 | B10 | S2 | 1F | R00 | ACF04 | 220 | 1S | MEP | M1F |  |  |  |  |  |
| T09M209203C0 |  | PT-09 ; Partitions 1st face (Mech RM-2) | 33d | 2011-11-03 | 2011-12-18 | T09M209201C0 |  |  |  |  | 186.25d | 35.5d | PARTITIONS [228 m]; PARTITIONS [1289 h]; Cost |  |  | T09M209203C0 | PT | C | 09 | M2 | PT | 092 | 03 | BILL 10 | B10 | S2 | 2F | R00 | ACF06 | 092 |  | GP | P1F |  |  | 314 | 1463 |  |
| T09M222006C0 |  | PT-09 ; 1st Fix, Inst of Water supply pipe (Mech RM-2) | 60d | 2011-11-17 | 2012-01-29 | T09M222011C0 SS+10d, T09M223001C0 |  |  |  |  | 124.88d | 0d | PLUMBING [4548 h]; Cost |  |  | T09M222006C0 | PT | C | 09 | M2 | ME | 220 | 06 | BILL 10 | B10 | S2 | 1F | R00 | ACF04 | 220 | 1S | MEP | M1F |  |  |  |  |  |
| T09M221111C0 |  | PT-09 ; 1st Fix, Inst of Sprinkler main pipe (Mech RM-2) | 48d | 2011-12-06 | 2012-01-31 | T09M222006C0 SS+14d, T09M223001C0 |  |  |  |  | 124.88d | 0d | MECHANICAL [1236 h]; Cost |  |  | T09M221111C0 | PT | C | 09 | M2 | ME | 211 | 11 | BILL 10 | B10 | S2 | 1F | R00 | ACF04 | 211 | 1S | MEP | M1F |  |  |  |  |  |
| T09M223019C0 |  | PT-09 ; 1st Fix, Inst of CHW pipe (Mech RM-2) | 54d | 2011-12-22 | 2012-02-25 | T09M221111C0 SS+14d, T09M223001C0 |  |  |  |  | 124.88d | 0d | MECHANICAL [2467.2 h]; Cost |  |  | T09M223019C0 | PT | C | 09 | M2 | ME | 230 | 19 | BILL 10 | B10 | S2 | 1F | R00 | ACF04 | 230 | 1S | MEP | M1F |  |  |  |  |  |
| T09M208101C0 |  | PT-09 ; Metal Door Frames (Mech RM-2) | 18d | 2011-12-28 | 2012-01-18 | T09M209201C0, GNHE08101C0 FS+126d |  |  |  |  | 195.88d | 45.12d | METAL DOORS [135 h]; Cost |  |  | T09M208101C0 | PT | C | 09 | M2 | DO | 081 | 01 | BILL 10 | B10 | S2 | DF | R00 | ACF06 | 081 |  |  |  |  |  | 316 | 1465 | 08 |
| T09M207101C0 |  | PT-09 ; Waterproofing (Mech RM-2) | 15d | 2012-01-23 | 2012-02-11 | T09M223013C0 |  |  |  |  | 177.38d | 26.62d | THERMAL & MOISTURE [960 h]; THERMAL & MOISTURE [6366 m2]; Cost |  |  | I05ME09901C0 | PT | C | 09 | M2 | FF | 071 | 01 | BILL 10 | B10 | S2 | 01 | R00 | ACF03 | 071 |  |  |  |  |  | 328 | 1469 |  |
| T09M223005C0 |  | PT-09 ; 1st Fix, Inst of Ducting (Mech RM-2) | 60d | 2012-01-23 | 2012-04-03 | T09M223001C0, T09M223013C0 |  |  |  |  | 38.38d | 0d | MECHANICAL [8022 h]; Cost |  |  | T09M223005C0 | PT | C | 09 | M2 | ME | 230 | 05 | BILL 10 | B10 | S2 | 1F | R00 | ACF04 | 230 | 1S | MEP | M1F |  |  |  |  |  |
| T09M226009C0 |  | PT-09 ; 2nd Fix, Inst of Equipment (DB, TR, SG) (Mech RM-2) | 90d | 2012-01-23 | 2012-05-08 | T09M223013C0 |  |  |  |  | 128.38d | 66d | ELECTRICAL [2133.6 h]; Cost |  |  | T09M226009C0 | PT | C | 09 | M2 | ME | 260 | 09 | BILL 10 | B10 | S2 | 2F | R00 | ACF04 | 260 | 2n | MEP |  |  | E |  |  |  |
| T09M226011C0 |  | PT-09 ; 1st Fix, Inst of Cable Tray (Mech RM-2) | 48d | 2012-01-23 | 2012-03-20 | T09M223013C0 |  |  |  |  | 98.38d | 0d | ELECTRICAL [399.6 h]; Cost |  |  | T09M226011C0 | PT | C | 09 | M2 | ME | 260 | 11 | BILL 10 | B10 | S2 | 1F | R00 | ACF04 | 260 | 1S | MEP | M1F |  |  |  |  |  |
| T09M227020C0 |  | PT-09 ; 2nd Fix, Inst of ELV Equipment (Panels) (Mech RM-2) | 66d | 2012-01-23 | 2012-04-10 | T09M223013C0 |  |  |  |  | 152.38d | 48d | ELECTRICAL [1819.2 h]; Cost |  |  | T09M227020C0 | PT | C | 09 | M2 | ME | 270 | 20 | BILL 10 | B10 | S2 | 2F | R00 | ACF04 | 270 | 2n | MEP |  |  | E |  |  |  |
| T09M209205C0 |  | PT-09 ; Partitions Closing (Mech RM-2) | 36.12d | 2012-01-30 | 2012-03-13 | T09M209201C0, T09M209203C0, T09M222006C0, T09M222011C0, TAFOA09214C1 FF, T09M208101C0 FF |  |  |  |  | 150.75d | 0d | PARTITIONS [228 m]; PARTITIONS [1664 h]; Cost |  |  | T09M209205C0 | PT | C | 09 | M2 | PT | 092 | 05 | BILL 10 | B10 | S2 | FF | R00 | ACF06 | 092 |  | GP | P2F |  |  | 315 | 1464 |  |
| T09M221119C0 |  | PT-09 ; 1st Fix, Inst of Sprinkler branch pipe (Mech RM-2) | 48d | 2012-02-01 | 2012-03-28 | T09M221111C0 |  |  |  |  | 138.88d | 0d | MECHANICAL [561.6 h]; Cost |  |  | T09M221119C0 | PT | C | 09 | M2 | ME | 211 | 19 | BILL 10 | B10 | S2 | 1F | R00 | ACF04 | 211 | 1S | MEP | M1F |  |  |  |  |  |
| T09M221117C0 |  | PT-09 ; 2nd Fix, Inst of Zone Control Valve (Mech RM-2) | 42d | 2012-02-26 | 2012-04-14 | T09M223013C0, T09M223019C0 |  |  |  |  | 148.88d | 86.5d | MECHANICAL [832.8 h]; Cost |  |  | T09M221117C0 | PT | C | 09 | M2 | ME | 211 | 17 | BILL 10 | B10 | S2 | 2F | R00 | ACF07 | 211 | 2n | MEP |  |  |  |  |  |  |
| T09M209601C0 |  | PT-09 ; Floor Finishes (Mech RM-2) | 40d | 2012-03-13 | 2012-04-29 | T09M207101C0, T09M209201C0, T09M209205C0 |  |  |  |  | 150.75d | 8d | ASSORTED FLOOR FINISH [38776 h]; ASSORTED FLOOR FINISH [21539 m2]; Cost |  |  | T09M209601C0 | PT | C | 09 | M2 | FF | 096 | 01 | BILL 10 | B10 | S2 | 01 | R00 | ACF06 | FF |  |  |  |  |  | 326 | 1501 |  |
| T09M209901C0 |  | PT-09 ; Wall Prime & 1st coat (Mech RM-2) | 24d | 2012-03-13 | 2012-04-10 | T09M209205C0 |  |  |  |  | 158.75d | 0d | WALL PAINT [359 h]; WALL PAINT [447 m2]; Cost |  |  | T09M209901C0 | PT | C | 09 | M2 | PA | 099 | 01 | BILL 10 | B10 | S2 | 01 | R00 | ACF06 | 099 |  |  |  |  |  | 328 | 1469 |  |
| T09M226015C0 |  | PT-09 ; Final Fix, Inst of Ceiling rose (Mech RM-2) | 36d | 2012-03-13 | 2012-04-24 | T09M209205C0 |  |  |  |  | 194.75d | 156.38d | ELECTRICAL [61.2 h]; Cost |  |  | T09M226015C0 | PT | C | 09 | M2 | ME | 260 | 15 | BILL 10 | B10 | S2 | FF | R00 | ACF07 | 260 | FF | MEP |  |  |  |  |  |  |
| T09M226007C0 |  | PT-09 ; 2nd Fix, Cable Pulling (Mech RM-2) | 48d | 2012-03-20 | 2012-05-15 | T09M226011C0 |  |  |  |  | 98.38d | 60d | ELECTRICAL [2683.2 h]; Cost |  |  | T09M226007C0 | PT | C | 09 | M2 | ME | 260 | 07 | BILL 10 | B10 | S2 | 2F | R00 | ACF07 | 260 | 2n | MEP |  |  |  |  |  |  |
| T09M221115C0 |  | PT-09 ; 2nd Fix, Inst of Sprinkler droppers (Mech RM-2) | 42d | 2012-03-29 | 2012-05-16 | T09M209205C0, T09M221119C0 |  |  |  |  | 138.88d | 0d | MECHANICAL [1602 h]; Cost |  |  | T09M221115C0 | PT | C | 09 | M2 | ME | 211 | 15 | BILL 10 | B10 | S2 | 2F | R00 | ACF07 | 211 | 2n | MEP |  |  |  |  |  |  |
| T09M223015C0 |  | PT-09 ; 2nd Fix, Inst of VCD's/FD's (Mech RM-2) | 42d | 2012-04-03 | 2012-05-22 | T09M223005C0 |  |  |  |  | 98.38d | 6d | MECHANICAL [1753.2 h]; Cost |  |  | T09M223015C0 | PT | C | 09 | M2 | ME | 230 | 15 | BILL 10 | B10 | S2 | 2F | R00 | ACF07 | 230 | 2n | MEP |  |  |  |  |  |  |
| T09M223017C0 |  | PT-09 ; 2nd Fix, Insulation of CHW pipe & Duct (Mech RM-2) | 48d | 2012-04-03 | 2012-05-29 | T09M223005C0, T09M223019C0 |  |  |  |  | 92.38d | 0d | MECHANICAL [3064.8 h]; Cost |  |  | T09M223017C0 | PT | C | 09 | M2 | ME | 230 | 17 | BILL 10 | B10 | S2 | 2F | R00 | ACF07 | 230 | 2n | MEP |  |  |  |  |  |  |
| T09M227010C0 |  | PT-09 ; 1st Fix, Inst of Trunking for ELV system (Mech RM-2) | 48d | 2012-04-03 | 2012-05-29 | T09M223005C0 |  |  |  |  | 38.38d | 0d | ELECTRICAL [1512 h]; Cost |  |  | T09M227010C0 | PT | C | 09 | M2 | ME | 270 | 10 | BILL 10 | B10 | S2 | 1F | R00 | ACF04 | 270 | 1S | MEP | M1F |  |  |  |  |  |
| T09M209903C0 |  | PT-09 ; Wall - Final Paint (Mech RM-2) | 24d | 2012-04-10 | 2012-05-08 | T09M209901C0 |  |  |  |  | 164.75d | 0d | WALL PAINT [194 h]; WALL PAINT [241 m2]; Cost |  |  | T09M209903C0 | PT | C | 09 | M2 | PA | 099 | 03 | BILL 10 | B10 | S2 | 02 | R00 | ACF06 | 099 |  |  |  |  |  | 329 | 1470 |  |
| T09M226019C0 |  | PT-09 ; Final Fix, Inst of Light fittings (Mech RM-2) | 48d | 2012-04-10 | 2012-06-05 | T09M209901C0 |  |  |  |  | 158.75d | 120.38d | ELECTRICAL [7815.6 h]; Cost |  |  | T09M226019C0 | PT | C | 09 | M2 | ME | 260 | 19 | BILL 10 | B10 | S2 | FF | R00 | ACF07 | 260 | FF | MEP |  |  |  |  |  |  |
| T09M223009C0 |  | PT-09 ; 2nd Fix, Inst of VAV'S CHW connection (Mech RM-2) | 42d | 2012-04-17 | 2012-06-05 | T09M223011C0 |  |  |  |  | 116.38d | 0d | MECHANICAL [1450.8 h]; Cost |  |  | T09M223009C0 | PT | C | 09 | M2 | ME | 230 | 09 | BILL 10 | B10 | S2 | 2F | R00 | ACF07 | 230 | 2n | MEP |  |  |  |  |  |  |
| T09M222003C0 |  | PT-09 ; Final Fix, Inst of All drain (Mech RM-2) | 18d | 2012-05-08 | 2012-05-29 | T09M209601C0, T09M209903C0 |  |  |  |  | 164.75d | 126.38d | PLUMBING [1378.8 h]; Cost |  |  | T09M222003C0 | PT | C | 09 | M2 | ME | 220 | 03 | BILL 10 | B10 | S2 | FF | R00 | ACF07 | 220 | FF | MEP |  |  |  |  |  |  |
| T09M226017C0 |  | PT-09 ; Final Fix, Inst of Switch/Sockets (Mech RM-2) | 12d | 2012-05-08 | 2012-05-22 | T09M209901C0, T09M209903C0 |  |  |  |  | 170.75d | 132.38d | ELECTRICAL [362.4 h]; Cost |  |  | T09M226017C0 | PT | C | 09 | M2 | ME | 260 | 17 | BILL 10 | B10 | S2 | FF | R00 | ACF07 | 260 | FF | MEP |  |  |  |  |  |  |
| T09M208105C0 |  | PT-09 ; Metal Doors (Mech RM-2) | 22d | 2012-05-13 | 2012-06-07 | T09M108105C0, T09M208101C0, T09M209601C0, T09M209901C0 |  |  |  |  | 138.5d | 0d | METAL DOORS [560 h]; METAL DOORS [56 no]; Cost |  |  | T09M208105C0 | PT | C | 09 | M2 | DO | 081 | 05 | BILL 10 | B10 | S2 | DR | R00 | ACF06 | 081 |  |  |  |  |  | 317 | 1466 | 08 |
| T09M221121C0 |  | PT-09 ; Final Fix, Inst of Sprinklers head (Mech RM-2) | 36d | 2012-05-17 | 2012-06-28 | T09M221115C0 |  |  |  |  | 138.88d | 100.5d | MECHANICAL [234 h]; Cost |  |  | T09M221121C0 | PT | C | 09 | M2 | ME | 211 | 21 | BILL 10 | B10 | S2 | FF | R00 | ACF07 | 211 | FF | MEP |  |  |  |  |  |  |
| T09M223023C0 |  | PT-09 ; Final Fix, Inst of Flexible Duct & Plenum boxes (Mech RM-2) | 36d | 2012-05-29 | 2012-07-11 | T09M223015C0, T09M223017C0 |  |  |  |  | 92.38d | 0d | MECHANICAL [30 h]; Cost |  |  | T09M223023C0 | PT | C | 09 | M2 | ME | 230 | 23 | BILL 10 | B10 | S2 | FF | R00 | ACF07 | 230 | FF | MEP |  |  |  |  |  |  |
| T09M227001C0 |  | PT-09 ; 1st Fix, Wiring/ Cabling work (Mech RM-2) | 48d | 2012-05-29 | 2012-07-25 | T09M226001C0, T09M226011C0, T09M227010C0 |  |  |  |  | 38.38d | 0d | ELECTRICAL [392.4 h]; Cost |  |  | T09M227001C0 | PT | C | 09 | M2 | ME | 270 | 01 | BILL 10 | B10 | S2 | 1F | R00 | ACF04 | 270 | 1S | MEP | M1F |  |  |  |  |  |
| T09M227030C0 |  | PT-09 ; Final Fix, Inst of ELV device (Detector/Speaker) (Mech RM-2) | 42d | 2012-06-05 | 2012-07-25 | T09M209901C0, T09M223009C0, T09M227020C0 |  |  |  |  | 116.38d | 78d | ELECTRICAL [3571.2 h]; Cost |  |  | T09M227030C0 | PT | C | 09 | M2 | ME | 270 | 30 | BILL 10 | B10 | S2 | FF | R00 | ACF07 | 270 | FF | MEP |  |  |  |  |  |  |
| T09M208709C0 |  | PT-09 ; Ironmongery (Mech RM-2) | 30d | 2012-06-07 | 2012-07-14 | T09M208105C0 |  |  |  |  | 138.5d | 100.12d | IRONMONGERY [530 h]; IRONMONGERY [53 no]; Cost |  |  | T09M208709C0 | PT | C | 09 | M2 | DO | 087 | 09 | BILL 10 | B10 | S2 | IM | R00 | ACF06 | 087 |  |  |  |  |  | 322 | 1467 | 08 |
| T09M223021C0 |  | PT-09 ; Final Fix, Inst of Grilles & Diffusers (Mech RM-2) | 36d | 2012-07-11 | 2012-08-25 | T09M223023C0 |  |  |  |  | 92.38d | 54d | MECHANICAL [1498.8 h]; Cost |  |  | T09M223021C0 | PT | C | 09 | M2 | ME | 230 | 21 | BILL 10 | B10 | S2 | FF | R00 | ACF07 | 230 | FF | MEP |  |  |  |  |  |  |
| T09M226005C0 |  | PT-09 ; 2nd Fix, Wiring for Power/Lighting/Emergency (Mech RM-2) | 42d | 2012-07-25 | 2012-09-15 | T09M226001C0, T09M226007C0, T09M226011C0, T09M227001C0, T09M227010C0 |  |  |  |  | 38.38d | 0d | ELECTRICAL [392.4 h]; Cost |  |  | T09M226005C0 | PT | C | 09 | M2 | ME | 260 | 05 | BILL 10 | B10 | S2 | 2F | R00 | ACF07 | 260 | 2n | MEP |  |  |  |  |  |  |
| T09M227003C0 |  | PT-09 ; Final Fix, BMS connection work to Equipment (Mech RM-2) | 54d | 2012-07-25 | 2012-09-29 | T09M221117C0, T09M223011C0, T09M223013C0, T09M223015C0, T09M226009C0, T09M227001C0, T09M227020C0 |  |  |  |  | 62.38d | 24d | ELECTRICAL [29564.4 h]; Cost |  |  | T09M227003C0 | PT | C | 09 | M2 | ME | 270 | 03 | BILL 10 | B10 | S2 | FF | R00 | ACF07 | 270 | FF | MEP |  |  |  |  |  |  |
| T09M226013C0 |  | PT-09 ; Final Fix, Termination & Gladding of Cables (Mech RM-2) | 36d | 2012-09-15 | 2012-10-29 | T09M209205C0, T09M226005C0 |  |  |  |  | 38.38d | 0d | ELECTRICAL [148.8 h]; Cost |  |  | T09M226013C0 | PT | C | 09 | M2 | ME | 260 | 13 | BILL 10 | B10 | S2 | FF | R00 | ACF07 | 260 | FF | MEP |  |  |  |  |  |  |

| ID | WBS | Activity | Duration | Start | Finish | Predecessors | Complete | Remaining | Planned start | Planned finish | Total float | Free float | Resources | Cost | Actual cost | change id | CCAD BUILDING(SET) | CCAD PHASE(SET) | CCAD FLOOR(SET) | CCAD ZONE(SET) | CCAD WORK(SET) | CCAD SECTION(SET) | CCAD SERIAL No.(SET) | CCAD CBS(SET) | CCAD BILL(SET) | CCAD HANDOVER(SET) | CCAD TAG(SET) | CCAD REV(SET) | CCADACF (SET) | CCAD SSCF | July2011 Target% Complete | Claimed This Month | CCAD SUB ZONE MEP(SET) | CCAD CSA | Act Selector % | Change Order # | NEW ACTIVITY ID | R3 Partitions | user_number8 | user_integer1 | user_integer2 | user_number7 | P_811 | P_711 | CCAD DIVISION(SET) | CCAD MEQ |
| --- | --- | --- | --- | --- | --- | --- | --- | --- | --- | --- | --- | --- | --- | --- | --- | --- | --- | --- | --- | --- | --- | --- | --- | --- | --- | --- | --- | --- | --- | --- | --- | --- | --- | --- | --- | --- | --- | --- | --- | --- | --- | --- | --- | --- | --- | --- |
|  | 10 | **Precommissioning Tesing & snagging (Mech-2)** |  | 2012-10-29 | 2012-12-18 |  |  |  |  |  |  |  |  |  |  |  |  |  |  |  |  |  |  |  |  |  |  |  |  |  |  |  |  |  |  |  |  |  |  |  |  |  |  |  |  |  |
| T09TS01811C0 |  | PT-09 ; MEP de-snag, FIREM sign-off | 12d | 2012-10-29 | 2012-11-12 | T09M221123C0, T09M226015C0, T09M226017C0, T09M226019C0, T09M222003C0, T09M227030C0, T09M223023C0, T09M221121C0, T09M223021C0, T09M227003C0, T09M226013C0 |  |  |  |  | 38.38d | 0d | TESTING & COMMISSIONING [510 h]; Cost |  |  | T09TS01801C0 | PT | C | 09 | TS | SC | 018 | 01 | BILL 10 | B10 | S2 | 01 | R00 | ACF07 | 018 |  |  |  |  |  |  |  |  |  |  |  |  |  |  |  |  |
| T09TS01805C0 |  | PT-09 ; Touch-up & Clean / JV inspection /CIR /De-snag | 18.12d | 2012-11-12 | 2012-12-05 | T09M207101C0, T09M208709C0, T09M209601C0, T09M209903C0, T09TS01811C0, T09CO04412C0, T09CO04413C0 |  |  |  |  | 38.38d | 3.62d | TESTING & COMMISSIONING [128 h]; Cost |  |  | T09TS01802C0 | PT | C | 09 | TS | SC | 018 | 02 | BILL 10 | B10 | S2 | 02 | R00 | ACF07 | 018 |  |  |  |  |  |  |  |  |  |  |  |  |  |  |  |  |
| T09TS01808C0 |  | PT-09 ; Consultant's final de-snag inspection | 7d | 2012-12-10 | 2012-12-18 | T09TS01805C0, T09TS01807C0 |  |  |  |  | 34.75d | 11.65d | Labor General [1 h]; Cost |  |  | T09TS01803C0 | PT | C | 09 | TS | SC | 018 | 03 | BILL 10 | B10 | S2 | 03 | R00 | ACF07 | 018 |  |  |  |  |  |  |  |  |  |  |  |  |  |  |  |  |
|  | 04 | **Public Area ( Elev.Lobby & Corridors )** |  | 2011-06-19 | 2013-01-10 |  |  |  |  |  |  |  |  |  |  |  |  |  |  |  |  |  |  |  |  |  |  |  |  |  |  |  |  |  |  |  |  |  |  |  |  |  |  |  |  |  |
| T09PA23001C0 |  | PT-09 ; 1st Fix, Inst. of Supports for MEP (Public Area) | 60d | 2011-06-19 A | 2011-12-04 | T09CO07807C0 | 20% | 48d | 2011-07-11 | 2011-09-21 | 23.1d | 0d | MECHANICAL [800.4 h]; Cost [45150.4 AED] | 45,150.38 | 9,030.08 | S08PA23001C0 | PT | C | 09 | PA | ME | 230 | 01 | BILL 10 | B10 | S2 | 1F | R00 | ACF04 | 230 | 50 | 5237.44 | 1S | MEP | M1F |  |  |  |  |  |  |  |  |  |  |  |
| T09PA26001C0 |  | PT-09 ; 1st Fix, Inst of Trunking/Conduiting (Public Area) | 54d | 2011-06-22 A | 2011-12-04 | T09CO07807C0, T09PA23001C0 SS | 10% | 48.49d | 2011-08-25 | 2011-10-30 | 135.1d | 48d | ELECTRICAL [4268.4 h]; Cost [37790.1 AED] | 37,790.1 | 3,779.01 | S08PA26001C0 | PT | C | 09 | PA | ME | 260 | 01 | BILL 10 | B10 | S2 | 1F | R00 | ACF04 | 260 | 35 |  | 1S | MEP | M1F |  |  |  |  |  |  |  |  |  |  |  |
| T09PA26009C0 |  | PT-09 ; 2nd Fix, Inst of Wall conduites (Public Area) | 42d | 2011-06-26 A | 2012-01-18 | T09PA09201C0 | 10% | 37.8d | 2011-08-01 | 2011-09-21 | 83.16d | 4.2d | ELECTRICAL [734.4 h]; Cost [37790.1 AED] | 37,790.1 | 3,779.01 | S08PA26009C0 | PT | C | 09 | PA | ME | 260 | 09 | BILL 10 | B10 | S2 | 2F | R00 | ACF07 | 260 | 25 | 4438.43 | 2n | MEP |  |  |  |  |  |  |  |  |  |  |  |  |
| T09PA22019C0 |  | PT-09 ; 1st Fix, Inst of Drainage pipe (ceiling) (Public Area) | 54d | 2011-07-05 A | 2011-12-04 | T09PA23001C0 SS | 10% | 48.49d | 2011-10-01 | 2011-12-08 | 71.1d | 48d | PLUMBING [1378.8 h]; Cost [74493.8 AED] | 74,493.83 | 7,449.38 | S08PA22019C0 | PT | C | 09 | PA | ME | 220 | 19 | BILL 10 | B10 | S2 | 1F | R00 | ACF04 | 220 | 55 |  | 1S | MEP | M1F |  |  |  |  |  |  |  |  |  |  |  |
| T09PA09201C0 |  | PT-09 ; Metal Studs (Public Area) | 42d | 2011-07-10 A | 2011-12-04 | T09PA23001C0 SS, T09PA23001C0 FF | 10% | 37.8d | 2011-08-07 | 2011-09-26 | 78.96d | 0d | PARTITIONS [982 h]; PARTITIONS - Metal Studs [136 m]; Cost |  |  | S08PA09201C0 | PT | C | 09 | PA | PT | 092 | 01 | BILL 10 | B10 | S2 | 1F | R00 | ACF06 | 092 |  |  |  | GP | PMS | 313 | 944 | R3 |  |  |  |  |  |  |  |  |
| T09PA09501C0 |  | PT-09 ; Ceiling Grid and Service Tile (Public Area) | 36d | 2011-08-10 A | 2012-07-09 | T09PA09205C0 SS+15d, T09PA21117C0, T09PA23008C0, T09PA23009C0, T09PA23015C0, T09PA27001C0, T09PA26053C0 FF, T09PA09901C0 | 60% | 14.4d | 2012-04-03 | 2012-05-15 | 23.1d | 0d | CEILING GRID FOR GYPSUM [1782.42 h]; CEILING GRID FOR GYPSUM [152.54 m2]; Cost |  |  | S08PA09501C0 | PT | C | 09 | PA | CE | 095 | 01 | BILL 10 | B10 | S2 | 01 | R00 | ACF06 | 095 |  |  |  |  |  | 323 | 952 |  | 0 | 0 | 0 | 0 | 30 | 0 |  |  |
| T09PA09203C0 |  | PT-09 ; Partitions early wall & 1st face (Public Area) | 32.88d | 2011-12-04 | 2012-01-12 | T09PA09201C0 |  |  |  |  | 94.09d | 27.12d | PARTITIONS [136 m]; PARTITIONS [758 h]; Cost |  |  | S08PA09203C0 | PT | C | 09 | PA | PT | 092 | 03 | BILL 10 | B10 | S2 | 2F | R00 | ACF06 | 092 |  |  |  | GP | P1F | 314 | 945 |  |  |  |  |  |  |  |  |  |
| T09PA22005C0 |  | PT-09 ; 1st Fix, Inst of Water supply pipe (ceiling) (Public Area) | 60d | 2011-12-04 | 2012-02-14 | T09PA22019C0 SS+10d, T09PA23001C0 |  |  |  |  | 23.1d | 0d | PLUMBING [4548 h]; Cost |  |  | S08PA22005C0 | PT | C | 09 | PA | ME | 220 | 05 | BILL 10 | B10 | S2 | 1F | R00 | ACF04 | 220 | 55 |  | 1S | MEP | M1F |  |  |  |  |  |  |  |  |  |  |  |
| T09PA22011C0 |  | PT-09 ; 2nd Fix, Drainage/Water pipe (wall) (Public Area) | 42d | 2011-12-04 | 2012-01-23 | T09PA09201C0 |  |  |  |  | 78.96d | 0d | PLUMBING [1378.8 h]; Cost |  |  | S08PA22011C0 | PT | C | 09 | PA | ME | 220 | 11 | BILL 10 | B10 | S2 | 2F | R00 | ACF07 | 220 | 20 |  | 2n | MEP |  |  |  |  |  |  |  |  |  |  |  |  |
| T09PA27010C0 |  | PT-09 ; 1st Fix, Inst of Trunking for ELV system (Public Area) | 54d | 2011-12-04 | 2012-02-07 | T09CO07807C0, T09PA23001C0, T09PA26001C0 SS+12d |  |  |  |  | 87.1d | 0d | ELECTRICAL [3202.8 h]; Cost |  |  | S08PA27010C0 | PT | C | 09 | PA | ME | 270 | 10 | BILL 10 | B10 | S2 | 1F | R00 | ACF04 | 270 | 35 |  | 1S | MEP | M1F |  |  |  |  |  |  |  |  |  |  |  |
| T09PA26013C0 |  | PT-09 ; 1st Fix, Inst of Cable Tray (Public Area) | 48d | 2011-12-15 | 2012-02-12 | T09CO07807C0, T09PA23001C0, T09PA27010C0 SS+10d |  |  |  |  | 87.1d | 0d | ELECTRICAL [399.6 h]; Cost |  |  | S08PA26013C0 | PT | C | 09 | PA | ME | 260 | 13 | BILL 10 | B10 | S2 | 1F | R00 | ACF04 | 260 | 45 |  | 1S | MEP | M1F |  |  |  |  |  |  |  |  |  |  |  |
| T09PA21111C0 |  | PT-09 ; 1st Fix, Inst of Sprinkler main pipe (Public Area) | 48d | 2011-12-18 | 2012-02-14 | T09PA22005C0 SS+12d, T09PA23001C0 |  |  |  |  | 23.1d | 0d | MECHANICAL [853.2 h]; Cost |  |  | S08PA21111C0 | PT | C | 09 | PA | ME | 211 | 11 | BILL 10 | B10 | S2 | 1F | R00 | ACF04 | 211 |  |  | 1S | MEP | M1F |  |  |  |  |  |  |  |  |  |  |  |
| T09PA08103C0 |  | PT-09 ; Door Frames (Public Area) | 18d | 2011-12-28 | 2012-01-18 | T09PA09201C0, GNHE08101C0 FS+126d |  |  |  |  | 124.6d | 0d | ASSORTED DOORS [73 h]; Cost |  |  | S08PA08103C0 | PT | C | 09 | PA | DO | 081 | 03 | BILL 10 | B10 | S2 | DF | R00 | ACF06 | 081 |  |  |  |  |  | 316 | 947 |  |  |  |  |  |  |  | 08 |  |
| T09PA23017C0 |  | PT-09 ; 1st Fix, Inst of CHW pipe (Public Area) | 54d | 2012-01-04 | 2012-03-08 | T09PA21111C0 SS+14d, T09PA23001C0 |  |  |  |  | 23.1d | 0d | MECHANICAL [2467.2 h]; Cost |  |  | S08PA23017C0 | PT | C | 09 | PA | ME | 230 | 17 | BILL 10 | B10 | S2 | 1F | R00 | ACF04 | 230 |  |  | 1S | MEP | M1F |  |  |  |  |  |  |  |  |  |  |  |
| T09PA23023C0 |  | PT-09 ; 1st Fix, Inst of Main Ducting (Public Area) | 60d | 2012-01-12 | 2012-03-24 | T09PA23001C0, T09PA23017C0 SS+7d |  |  |  |  | 52.1d | 0d | MECHANICAL [8022 h]; Cost |  |  | S08PA23023C0 | PT | C | 09 | PA | ME | 230 | 23 | BILL 10 | B10 | S2 | 1F | R00 | ACF04 | 230 |  |  | 1S | MEP | M1F |  |  |  |  |  |  |  |  |  |  |  |
| T09PA01005C0 |  | PT-09 ; 2nd, Wall Inspection by Consultant (Public Area) | 6d | 2012-01-23 | 2012-01-30 | T09PA22011C0, T09PA26009C0 |  |  |  |  | 78.96d | 12d | Labor General [0.6 h]; Cost |  |  | S08PA01005C0 | PT | C | 09 | PA | ME | 010 | 05 | BILL 10 | B10 | S2 | WI | R00 | ACF07 | 010 |  |  | 2n | MEP |  |  |  |  |  |  |  |  |  |  |  |  |
| T09PA27001C0 |  | PT-09 ; 1st Fix, Wiring/ Cabling work (Public Area) | 48d | 2012-02-12 | 2012-04-08 | T09PA26001C0, T09PA26013C0, T09PA27010C0 |  |  |  |  | 87.1d | 64d | ELECTRICAL [392.4 h]; Cost |  |  | S08PA27001C0 | PT | C | 09 | PA | ME | 270 | 01 | BILL 10 | B10 | S2 | 1F | R00 | ACF04 | 270 |  |  | 1S | MEP | M1F |  |  |  |  |  |  |  |  |  |  |  |
| T09PA09205C0 |  | PT-09 ; Partitions Closing (Public Area) | 36.14d | 2012-02-14 | 2012-03-27 | T09PA01005C0, T09PA09203C0, T09PA22005C0, T09PA22019C0, TAFOA09214C1 FF, T09PA08103C0 FF |  |  |  |  | 66.96d | 0d | PARTITIONS [136 m]; PARTITIONS [977 h]; Cost |  |  | S08PA09205C0 | PT | C | 09 | PA | PT | 092 | 05 | BILL 10 | B10 | S2 | FF | R00 | ACF06 | 092 |  |  |  | GP | P2F | 315 | 946 | R3 |  |  |  |  |  |  |  |  |
| T09PA21117C0 |  | PT-09 ; 1st Fix, Inst of Sprinkler branch pipe (Public Area) | 48d | 2012-02-14 | 2012-04-10 | T09PA09201C0, T09PA21111C0 |  |  |  |  | 85.1d | 62d | MECHANICAL [561.6 h]; Cost |  |  | S08PA21117C0 | PT | C | 09 | PA | ME | 211 | 17 | BILL 10 | B10 | S2 | 1F | R00 | ACF04 | 211 |  |  | 1S | MEP | M1F |  |  |  |  |  |  |  |  |  |  |  |
| T09PA23009C0 |  | PT-09 ; 2nd Fix, Inst of VAV'S CHW connection (Public Area) | 42d | 2012-03-08 | 2012-04-26 | T09PA23017C0 |  |  |  |  | 23.1d | 0d | MECHANICAL [1450.8 h]; Cost |  |  | S08PA23009C0 | PT | C | 09 | PA | ME | 230 | 09 | BILL 10 | B10 | S2 | 2F | R00 | ACF07 | 230 |  |  | 2n | MEP |  |  |  |  |  |  |  |  |  |  |  |  |
| T09PA23008C0 |  | PT-09 ; 1st Fix, Inst of VCD's/FD's (Public Area) | 48d | 2012-03-24 | 2012-05-19 | T09PA23023C0 |  |  |  |  | 52.1d | 29d | MECHANICAL [1753.2 h]; Cost |  |  | S08PA23008C0 | PT | C | 09 | PA | ME | 230 | 08 | BILL 10 | B10 | S2 | 1F | R00 | ACF04 | 230 |  |  | 1S | MEP | M1F |  |  |  |  |  |  |  |  |  |  |  |
| T09PA09901C0 |  | PT-09 ; Wall Prime & 1st coat (Public Area) | 30d | 2012-03-27 | 2012-05-01 | T09PA09205C0 |  |  |  |  | 66.96d | 0d | WALL PAINT [148 h]; WALL PAINT [183 m2]; Cost |  |  | S08PA09901C0 | PT | C | 09 | PA | PA | 099 | 01 | BILL 10 | B10 | S2 | 01 | R00 | ACF06 | 099 |  |  |  |  |  | 328 | 956 |  |  |  |  |  |  |  |  |  |
| T09PA26005C0 |  | PT-09 ; 2nd Fix, Wiring for Power/Lighting/Emergency (Public Area) | 42d | 2012-03-27 | 2012-05-15 | T09PA09205C0 |  |  |  |  | 104.49d | 0d | ELECTRICAL [392.4 h]; Cost |  |  | S08PA26005C0 | PT | C | 09 | PA | ME | 260 | 05 | BILL 10 | B10 | S2 | 2F | R00 | ACF07 | 260 |  |  | 2n | MEP |  |  |  |  |  |  |  |  |  |  |  |  |
| T09PA26007C0 |  | PT-09 ; 2nd Fix, Cable Pulling (Public Area) | 48d | 2012-03-27 | 2012-05-22 | T09PA09201C0 SS+6d, T09PA09205C0 |  |  |  |  | 140.49d | 100.26d | ELECTRICAL [2683.2 h]; Cost |  |  | S08PA26007C0 | PT | C | 09 | PA | ME | 260 | 07 | BILL 10 | B10 | S2 | 2F | R00 | ACF07 | 260 |  |  | 2n | MEP |  |  |  |  |  |  |  |  |  |  |  |  |
| T09PA26011C0 |  | PT-09 ; 2nd Fix, Inst of Equipment (DB) (Public Area) | 54d | 2012-03-27 | 2012-05-29 | T09PA09205C0 |  |  |  |  | 123.36d | 100.26d | ELECTRICAL [878.4 h]; Cost |  |  | S08PA26011C0 | PT | C | 09 | PA | ME | 260 | 11 | BILL 10 | B10 | S2 | 2F | R00 | ACF04 | 260 |  |  | 2n | MEP |  |  |  |  |  |  |  |  |  |  |  | E |
| T09PA26053C0 |  | PT-09 ; 2nd Fix, Wiring / Cabling (Public Area) | 42d | 2012-03-27 | 2012-05-15 | T09PA09203C0, T09PA09205C0 |  |  |  |  | 69.36d | 46.26d | ELECTRICAL [392.4 h]; Cost |  |  | S08PA26053C0 | PT | C | 09 | PA | ME | 260 | 53 | BILL 10 | B10 | S2 | 2F | R00 | ACF07 | 260 |  |  | 2n | MEP |  | 389 | 977 |  |  |  |  |  |  |  |  |  |
| T09PA23015C0 |  | PT-09 ; 2nd Fix, Insulation of CHW pipe & Duct (Public Area) | 48d | 2012-04-26 | 2012-06-23 | T09PA23009C0, T09PA23017C0, T09PA23023C0 |  |  |  |  | 23.1d | 0d | MECHANICAL [3064.8 h]; Cost |  |  | S08PA23015C0 | PT | C | 09 | PA | ME | 230 | 15 | BILL 10 | B10 | S2 | 2F | R00 | ACF07 | 230 |  |  | 2n | MEP |  |  |  |  |  |  |  |  |  |  |  |  |
| T09PA05501C0 |  | PT-09 ; Handrails & balustrade (Public Area) | 36d | 2012-05-01 | 2012-06-12 | T09PA09901C0, TAFT105509C0, TAFT805509C0 |  |  |  |  | 171.36d | 148.26d | SECONDARY STEEL [118 h]; Cost |  |  | S08PA05501C0 | PT | C | 09 | PA | SW | 055 | 01 | BILL 10 | B10 | S2 | 01 | R00 | ACF03 | a |  |  |  |  |  |  |  |  |  |  |  |  |  |  |  |  |
| T09PA26015C0 |  | PT-09 ; Final Fix, Termination & Gladding of Cables (Public Area) | 36d | 2012-05-15 | 2012-06-27 | T09PA26005C0 |  |  |  |  | 104.49d | 64.26d | ELECTRICAL [148.8 h]; Cost |  |  | S08PA26015C0 | PT | C | 09 | PA | ME | 260 | 15 | BILL 10 | B10 | S2 | FF | R00 | ACF07 | 260 |  |  | FF | MEP |  |  |  |  |  |  |  |  |  |  |  |  |
| T09PA09601C0 |  | PT-09 ; Flooring (Rubber & etc) (Public Area) | 30d | 2012-07-09 | 2012-08-13 | OGNMU00055S0, T09PA09205C0, T09PA09501C0 |  |  |  |  | 60.29d | 0d | RUBBER FLOOR [8 h]; RUBBER FLOOR [11 m2]; Cost |  |  | S08PA09601C0 | PT | C | 09 | PA | FF | 096 | 01 | BILL 10 | B10 | S2 | 03 | R00 | ACF06 | RF |  |  |  |  |  | 326 | 955 |  |  |  |  |  |  |  |  |  |
| T09PA09905C0 |  | PT-09 ; Ceiling Prime & 1st coat (Public Area) | 30d | 2012-07-09 | 2012-08-13 | T09PA09501C0 |  |  |  |  | 89.1d | 0d | CEILING PAINT [13 h]; CEILING PAINT [16 m2]; Cost |  |  | S08PA09905C0 | PT | C | 09 | PA | PA | 099 | 05 | BILL 10 | B10 | S2 | 01 | R00 | ACF06 | 099 |  |  |  |  |  | 330 | 958 |  |  |  |  |  |  |  |  |  |
| T09PA21115C0 |  | PT-09 ; 2nd Fix, Inst of Sprinkler droppers (Public Area) | 42d | 2012-07-09 | 2012-08-29 | T09PA09501C0 |  |  |  |  | 52.23d | 0d | MECHANICAL [1602 h]; Cost |  |  | S08PA21115C0 | PT | C | 09 | PA | ME | 211 | 15 | BILL 10 | B10 | S2 | 2F | R00 | ACF07 | 211 |  |  | 2n | MEP |  |  |  |  |  |  |  |  |  |  |  |  |
| T09PA23021C0 |  | PT-09 ; 2nd Fix, Inst of Flexible Duct & Plenum boxes (Public Area) | 42d | 2012-07-09 | 2012-08-29 | T09PA09205C0, T09PA09501C0 |  |  |  |  | 52.23d | 0d | MECHANICAL [30 h]; Cost |  |  | S08PA23021C0 | PT | C | 09 | PA | ME | 230 | 21 | BILL 10 | B10 | S2 | 2F | R00 | ACF07 | 230 |  |  | 2n | MEP |  |  |  |  |  |  |  |  |  |  |  |  |
| T09PA26017C0 |  | PT-09 ; Final Fix, Inst of Ceiling rose (Public Area) | 36d | 2012-07-09 | 2012-08-22 | T09PA09501C0 |  |  |  |  | 40.23d | 0d | ELECTRICAL [61.2 h]; Cost |  |  | S08PA26017C0 | PT | C | 09 | PA | ME | 260 | 17 | BILL 10 | B10 | S2 | FF | R00 | ACF07 | 260 |  |  | FF | MEP |  |  |  |  |  |  |  |  |  |  |  |  |
| T09PA27002C0 |  | PT-09 ; 2nd Fix, Wiring Droppers (Public Area) | 42d | 2012-07-09 | 2012-08-29 | T09PA09501C0 |  |  |  |  | 46.23d | 0d | ELECTRICAL [392.4 h]; Cost |  |  | S08PA27002C0 | PT | C | 09 | PA | ME | 270 | 02 | BILL 10 | B10 | S2 | 2F | R00 | ACF07 | 270 |  |  | 2n | MEP |  |  |  |  |  |  |  |  |  |  |  |  |
| T09PA27020C0 |  | PT-09 ; 2nd Fix, Inst of ELV Equipment (Panels) (Public Area) | 66d | 2012-07-09 | 2012-09-26 | T09PA09205C0, T09PA09501C0 |  |  |  |  | 23.1d | 0d | ELECTRICAL [1819.2 h]; Cost |  |  | S08PA27020C0 | PT | C | 09 | PA | ME | 270 | 20 | BILL 10 | B10 | S2 | 2F | R00 | ACF04 | 270 |  |  | 2n | MEP |  |  |  |  |  |  |  |  |  |  |  | E |
| T09PA21113C0 |  | PT-09 ; Final Fix, Inst of Sprinklers head/ Extinguisher (Public Area) | 36d | 2012-07-16 | 2012-08-29 | T09PA09501C0, T09PA21115C0 SS+6d |  |  |  |  | 52.23d | 12d | MECHANICAL [234 h]; Cost |  |  | S08PA21113C0 | PT | C | 09 | PA | ME | 211 | 13 | BILL 10 | B10 | S2 | FF | R00 | ACF07 | 211 |  |  | FF | MEP |  |  |  |  |  |  |  |  |  |  |  |  |
| T09PA23019C0 |  | PT-09 ; Final Fix, Inst of Grilles & Diffusers (Public Area) | 36d | 2012-07-16 | 2012-08-29 | T09PA09501C0, T09PA23021C0 SS+6d |  |  |  |  | 52.23d | 12d | MECHANICAL [1498.8 h]; Cost |  |  | S08PA23019C0 | PT | C | 09 | PA | ME | 230 | 19 | BILL 10 | B10 | S2 | FF | R00 | ACF07 | 230 |  |  | FF | MEP |  |  |  |  |  |  |  |  |  |  |  |  |
| T09PA26003C0 |  | PT-09 ; Final Fix, Inst of Light fittings (Public Area) | 48d | 2012-07-16 | 2012-09-12 | T09PA09501C0, T09PA26017C0 SS+6d |  |  |  |  | 40.23d | 0d | ELECTRICAL [7815.6 h]; Cost |  |  | S08PA26003C0 | PT | C | 09 | PA | ME | 260 | 03 | BILL 10 | B10 | S2 | FF | R00 | ACF07 | 260 |  |  | FF | MEP |  |  |  |  |  |  |  |  |  |  |  |  |
| T09PA27030C0 |  | PT-09 ; Final Fix, Inst of ELV devise (Detector/Speaker) (Public Area) | 42d | 2012-07-16 | 2012-09-05 | T09PA09501C0, T09PA27002C0 SS+6d |  |  |  |  | 46.23d | 6d | ELECTRICAL [3571.2 h]; Cost |  |  | S08PA27030C0 | PT | C | 09 | PA | ME | 270 | 30 | BILL 10 | B10 | S2 | FF | R00 | ACF07 | 270 |  |  | FF | MEP |  |  |  |  |  |  |  |  |  |  |  |  |
| T09PA08107C0 |  | PT-09 ; Doors (Public Area) | 19d | 2012-08-13 | 2012-09-06 | T09PA08103C0, T09PA09501C0, T09PA09601C0, T09PA09901C0 |  |  |  |  | 60.29d | 0d | ASSORTED DOORS [150 h]; ASSORTED DOORS [15 no]; Cost |  |  | S08PA08107C0 | PT | C | 09 | PA | DO | 081 | 07 | BILL 10 | B10 | S2 | DR | R00 | ACF06 | 081 |  |  |  |  |  | 317 | 948 |  |  |  |  |  |  |  | 08 |  |
| T09PA09903C0 |  | PT-09 ; Wall Final Paint (Public Area) | 30d | 2012-08-13 | 2012-09-19 | T09PA09901C0, T09PA09905C0, T09PA09501C0, T09PA09601C0 |  |  |  |  | 89.1d | 66d | WALL PAINT [79 h]; WALL PAINT [98 m2]; Cost |  |  | S08PA09903C0 | PT | C | 09 | PA | PA | 099 | 03 | BILL 10 | B10 | S2 | 02 | R00 | ACF06 | 099 |  |  |  |  |  | 329 | 957 |  |  |  |  |  |  |  |  |  |
| T09PA08301C0 |  | PT-09 ; Overhead coiling doors (Public Area) | 20d | 2012-09-06 | 2012-09-30 | CP3M108105C0, T09PA08107C0 |  |  |  |  | 60.29d | 0d | ASSORTED DOORS [344 h]; Cost |  |  | CP3ME08301C0 | PT | C | 09 | PA | DO | 083 | 01 | BILL 10 | B10 | S2 | 05 | R00 | ACF06 | 083 |  |  |  |  |  |  |  |  |  |  |  |  |  |  |  |  |
| T09PA01006C0 |  | PT-09 ; 2nd, Ceiling Inspection by Consultants (Public Area) | 6d | 2012-09-12 | 2012-09-19 | T09PA21115C0, T09PA23009C0, T09PA23015C0, T09PA27002C0, T09PA09501C0, T09PA21113C0, T09PA23019C0, T09PA26015C0, T09PA26017C0, T09PA26003C0, T09PA27030C0 |  |  |  |  | 40.23d | 0d | Labor General [0.6 h]; Cost |  |  | S08PA01006C0 | PT | C | 09 | PA | ME | 010 | 06 | BILL 10 | B10 | S2 | CI | R00 | ACF07 | 010 |  |  | 2n | MEP |  |  |  |  |  |  |  |  |  |  |  |  |
| T09PA09503C0 |  | PT-09 ; Ceiling closure - ACT/Gypsum (Public Area) | 21.88d | 2012-09-19 | 2012-10-15 | T09CO04405C0, T09PA01006C0, T09PA21115C0, T09PA26005C0, T09PA27001C0, T09PA27002C0, T09PA23021C0, T09PA26007C0 |  |  |  |  | 40.23d | 0d | ASSORTED CEILING FINISH [201.1 h]; CEILING GYPSUM [50.02 h]; ASSORTED CEILING FINISH [327 m2]; CEILING GYPSUM [153 m2]; Cost |  |  | S08PA09503C0 | PT | C | 09 | PA | CE | 095 | 03 | BILL 10 | B10 | S2 | 02 | R00 | ACF06 | 095 |  |  |  |  |  | 324 | 953 |  |  |  |  |  |  |  |  |  |
| T09PA09701C0 |  | PT-09 ; Wall finishes (ST, WD, WC) (Public Area) | 36d | 2012-09-26 | 2012-11-10 | OGNMU00051S0, T09PA26011C0, T09PA27020C0, TVT0114211C0, TVT0214211C0, TVT0714211C0, TVT3114211C0, TVT3214255C0, TVT3314245C0, T09PA09501C0 |  |  |  |  | 23.1d | 0d | ASSORTED WALL FINISH [120 h]; ASSORTED WALL FINISH [138 m2]; Cost |  |  | S08PA09701C0 | PT | C | 09 | PA | WF | 097 | 01 | BILL 10 | B10 | S2 | 01 | R00 | ACF06 | 097 |  |  |  |  |  | 105 | 1002 |  |  |  |  |  |  |  |  |  |
| T09PA08709C0 |  | PT-09 ; Ironmongery (Public Area) | 19.81d | 2012-09-30 | 2012-10-23 | T09PA08107C0, T09PA08301C0 |  |  |  |  | 60.29d | 37.19d | IRONMONGERY [220 h]; IRONMONGERY [22 no]; Cost |  |  | S08PA08709C0 | PT | C | 09 | PA | DO | 087 | 09 | BILL 10 | B10 | S2 | IM | R00 | ACF06 | 087 |  |  |  |  |  | 322 | 951 |  |  |  |  |  |  |  | 08 |  |
| T09PA09907C0 |  | PT-09 ; Ceiling Final paint (Public Area) | 18d | 2012-10-15 | 2012-11-07 | T09PA09601C0, T09PA09905C0, T09PA09503C0 |  |  |  |  | 49.23d | 26.12d | CEILING PAINT [9 h]; CEILING PAINT [9 m2]; Cost |  |  | S08PA09907C0 | PT | C | 09 | PA | PA | 099 | 07 | BILL 10 | B10 | S2 | 02 | R00 | ACF06 | 099 |  |  |  |  |  | 331 | 959 |  |  |  |  |  |  |  |  |  |
| T09PA26019C0 |  | PT-09 ; Final Fix, Inst of Switch/Sockets (Public Area) | 18d | 2012-10-15 | 2012-11-07 | T09PA09901C0, T09PA09503C0 |  |  |  |  | 40.23d | 0d | ELECTRICAL [362.4 h]; Cost |  |  | S08PA26019C0 | PT | C | 09 | PA | ME | 260 | 19 | BILL 10 | B10 | S2 | FF | R00 | ACF07 | 260 |  |  | FF | MEP |  |  |  |  |  |  |  |  |  |  |  |  |
| T09PA11001C0 |  | PT-09 ; Wall Protection (WP, CG, WG, FCG) (Public Area) | 24d | 2012-11-10 | 2012-12-10 | OGNMU00063S0, T09PA09701C0, T09PA09903C0 SS |  |  |  |  | 23.1d | 0d | FF&E [6 h]; Cost |  |  | S08PA11001C0 | PT | C | 09 | PA | WF | 110 | 01 | BILL 10 | B10 | S2 | 03 | R00 | ACF08 | b |  |  |  |  |  | 326 | 1001 |  |  |  |  |  |  |  |  |  |
| T09PA11009C0 |  | PT-09 ; Signage (Public Area) | 11.07d | 2012-11-10 | 2012-11-24 | OGNMU00071S0, T09PA09701C0 |  |  |  |  | 36.04d | 12.93d | SIGNAGES [29 h]; SIGNAGES [29.38 no]; Cost |  |  | S08PA11009C0 | PT | C | 09 | PA | SA | 110 | 09 | BILL 10 | B10 | S2 | 09 | R00 | ACF08 | c |  |  |  |  |  | 322 | 951 |  |  |  |  |  |  |  | 08 |  |

| ID | WBS | Activity | Duration | Start | Finish | Predecessors | Complete | Remaining | Planned start | Planned finish | Total float | Free float | Resources | Cost | Actual cost | change id | CCAD BUILDING(SET) | CCAD PHASE(SET) | CCAD FLOOR(SET) | CCAD ZONE(SET) | CCAD WORK(SET) | CCAD SECTION(SET) | CCAD SERIAL No.(SET) | CCAD CBS(SET) | CCAD BILL(SET) | CCAD HANDOVER(SET) | CCAD TAG(SET) | CCAD REV(SET) | CCADACF (SET) | CCAD SSCF | RENZ % COMPLETE | Phase | Area/ Department | Grids | Are | Weight & Nos | Process | Levels | Claimed This Month | CCAD CSA | U% | user_number8 | user_integer1 | user_integer2 | user_number7 | July2011 Target% Complete | P_811 | P_711 | CCAD SUB ZONE MEP(SET) | Act Selector % | Change Order # | NEW ACTIVITY ID | CCAD DIVISION(SET) | CCAD MEQ |
| --- | --- | --- | --- | --- | --- | --- | --- | --- | --- | --- | --- | --- | --- | --- | --- | --- | --- | --- | --- | --- | --- | --- | --- | --- | --- | --- | --- | --- | --- | --- | --- | --- | --- | --- | --- | --- | --- | --- | --- | --- | --- | --- | --- | --- | --- | --- | --- | --- | --- | --- | --- | --- | --- | --- |
|  | 10 | **Precommissioning Tesing & snagging (Public Area)** |  | 2012-11-07 | 2013-01-10 |  |  |  |  |  |  |  |  |  |  |  |  |  |  |  |  |  |  |  |  |  |  |  |  |  |  |  |  |  |  |  |  |  |  |  |  |  |  |  |  |  |  |  |  |  |  |  |  |  |
| T09TS01812C0 |  | PT-09 ; MEP de-snag, FIREM sign-off | 9d | 2012-11-07 | 2012-11-19 | T09PA26015C0, T09PA21113C0, T09PA23019C0, T09PA26017C0, T09PA26003C0, T09PA27030C0, T09PA26019C0 |  |  |  |  | 40.23d | 17.12d | TESTING & COMMISSIONING [510 h]; Cost |  |  | T09TS01801C0 | PT | C | 09 | TS | SC | 018 | 01 | BILL 10 | B10 | S2 | 01 | R00 | ACF07 | 018 |  |  |  |  |  |  |  |  |  |  |  |  |  |  |  |  |  |  |  |  |  |  |  |  |
| T09TS01806C0 |  | PT-09 ; Touch-up & Clean / JV inspection /CIR /De-snag | 18d | 2012-12-10 | 2012-12-31 | T09PA05501C0, T09PA08301C0, T09PA08709C0, T09PA09601C0, T09PA09701C0, T09PA09903C0, T09PA09907C0, T09PA11001C0, T09PA11009C0, T09TS01812C0, T09PA09503C0, T09CO04412C0, T09CO04413C0 |  |  |  |  | 23.1d | 0d | TESTING & COMMISSIONING [128 h]; Cost |  |  | T09TS01802C0 | PT | C | 09 | TS | SC | 018 | 02 | BILL 10 | B10 | S2 | 02 | R00 | ACF07 | 018 |  |  |  |  |  |  |  |  |  |  |  |  |  |  |  |  |  |  |  |  |  |  |  |  |
| T09TS01809C0 |  | PT-09 ; Consultant's final de-snag inspection | 7.12d | 2012-12-31 | 2013-01-10 | T09TS01806C0, T09TS01808C0 |  |  |  |  | 23.1d | 0d | Labor General [1 h]; Cost |  |  | T09TS01803C0 | PT | C | 09 | TS | SC | 018 | 03 | BILL 10 | B10 | S2 | 03 | R00 | ACF07 | 018 |  |  |  |  |  |  |  |  |  |  |  |  |  |  |  |  |  |  |  |  |  |  |  |  |
|  | 05 | **TR Room** |  |  |  |  |  |  |  |  |  |  |  |  |  |  |  |  |  |  |  |  |  |  |  |  |  |  |  |  |  |  |  |  |  |  |  |  |  |  |  |  |  |  |  |  |  |  |  |  |  |  |  |  |
|  | 10 | **Level 10** |  | 2011-01-10 | 2013-01-17 |  |  |  |  |  |  |  |  |  |  |  |  |  |  |  |  |  |  |  |  |  |  |  |  |  |  |  |  |  |  |  |  |  |  |  |  |  |  |  |  |  |  |  |  |  |  |  |  |  |
|  | 01 | **Structure & Envelopment** |  | 2011-01-10 | 2012-03-11 |  |  |  |  |  |  |  |  |  |  |  |  |  |  |  |  |  |  |  |  |  |  |  |  |  |  |  |  |  |  |  |  |  |  |  |  |  |  |  |  |  |  |  |  |  |  |  |  |  |
| T10SA03301C0 |  | PT-10 ; Corewall Concrete (Zone SA) | 12d | 2011-01-10 A | 2011-01-22 A | T09SA03301C0 | 100% |  | 2011-02-06 | 2011-02-19 |  |  | CONCRETE [6280 h]; CONCRETE [158 m3]; Cost |  |  | T10SA03301C0 | PT | C | 10 | SA | CT | 033 | 01 | BILL 10 | B10 | S2 | 04 | R00 | ACF03 | 033 | 100 | Z2 | PA | TRUS | D | A10 | EREC | 10FLR |  |  |  |  |  |  |  |  |  |  |  |  |  |  |  |  |
| T10SB03303C0 |  | PT-10 ; Corewall Concrete (Zone SB) | 12d | 2011-01-22 A | 2011-01-31 A | T09SB03303C0 | 100% |  | 2011-02-06 | 2011-02-19 |  |  | CONCRETE [6280 h]; CONCRETE [158 m3]; Cost |  |  | T10SB03303C0 | PT | C | 10 | SB | CT | 033 | 03 | BILL 10 | B10 | S2 | 04 | R00 | ACF03 | 033 | 100 | Z2 | PA | TRUS | D | A10 | EREC | 10FLR |  |  |  |  |  |  |  |  |  |  |  |  |  |  |  |  |
| T10CO05101C0 |  | PT-10 ; Erection of Structural Steel of 10 th Floor (Common Zone) | 5d | 2011-03-15 A | 2011-06-02 A | T09CO05103C0, T09CO05115C0 FF, T10SA03301C0, T10SB03303C0 | 100% |  | 2011-04-30 | 2011-05-05 |  |  | STRUCTURAL STEEL [12992 h]; STRUCTURAL STEEL [424 T(Fe)]; Cost |  |  | T10CO05101C0 | PT | C | 10 | CO | ST | 051 | 01 | BILL 10 | B10 | S2 | 01 | R00 | ACF03 | 051 | 98 | Z2 | PA | 10TH | E | A12A | EREC | 11FLR | 83478.74 | ST |  |  |  |  |  |  |  |  |  |  |  |  |  |  |
| T10CO05103C0 |  | PT-10 ; Alignment & welding of 10th Floor (Common Zone) | 3d | 2011-04-13 A | 2011-06-02 A | T10CO05101C0 | 100% |  | 2011-05-05 | 2011-05-09 |  |  | STRUCTURAL STEEL [1152 h]; Cost |  |  | T10CO05103C0 | PT | C | 10 | CO | ST | 051 | 03 | BILL 10 | B10 | S2 | 02 | R00 | ACF03 | 051 | 95 | Z2 | PA | 10TH | E | A12A | EREC | 11FLR | 23188.5 | ST |  |  |  |  |  |  |  |  |  |  |  |  |  |  |
| T10CO05305C0 |  | PT-10 ; Metal Decking 10 FLR (Common Zone) | 12d | 2011-05-15 A | 2011-06-05 A | OGNMU00005S0, T10CO05103C0, T11CO05101C0 | 100% |  | 2011-06-07 | 2011-06-21 |  |  | METAL DECKING [2760 h]; METAL DECKING [3493 m2]; Cost |  |  | T10CO05305C0 | PT | C | 10 | CO | ST | 053 | 05 | BILL 10 | B10 | S2 | 03 | R00 | ACF03 | 053 | 75 | Z2 | PA | 10TH | E | A12A | MDEC | 11FLR | 111595.77 | ST |  |  |  |  |  |  |  |  |  |  |  |  |  |  |
| T10CO03399C0 |  | PT-10 ; Concrete on Metal Decking 10 FLR (Common Zone) | 10d | 2011-06-02 A | 2011-07-11 A | T10CO05305C0 | 100% |  | 2011-06-05 | 2011-06-16 |  |  | CONCRETE [23776 h]; CONCRETE [598 m3]; Cost |  |  | T10CO05335C0 | PT | C | 10 | CO | CT | 033 | 99 | BILL 10 | B10 | S2 | 08 | R00 | ACF03 | 033 |  | Z2 | PA | 10TH | E | A12A | MDEC | 11FLR | 490200.82 |  |  |  |  |  |  |  |  |  |  |  |  |  |  |  |
| T10CO07807C0 |  | PT-10 ; Cementitious Fire Proofing Lvl 10 (Common Zone) | 12d | 2011-06-14 A | 2011-10-01 | T11CO03399C0 | 95% | 0.6d | 2011-07-31 | 2011-08-13 | 42.41d | 0d | CEMENTITIOUS FIREPROOFING [3066 h]; CEMENTITIOUS FIREPROOFING [6132 m2]; Cost |  |  | T10CO07807C0 | PT | C | 10 | CO | ST | 078 | 07 | BILL 10 | B10 | S2 | 04 | R00 | ACF03 | 078 |  | Z2 | PA | 10TH | E | A12A | FIRE | 11FLR |  | ST | 95 |  |  |  |  |  |  |  |  |  |  |  |  |  |
| T10CO04403C0 |  | PT-10 ; C2 Bracket (Common Zone) | 42d | 2011-09-05 A | 2011-10-19 | OGNMU00039S0, T10CO07807C0, T11CO04403C0 SS | 63% | 15.54d | 2011-09-10 | 2011-10-29 | 42.41d | 2.62d | FACADE CURTAIN WALL 2 [705.7 h]; Cost |  |  | T10CO04403C0 | PT | C | 10 | CO | FA | 044 | 03 | BILL 10 | B10 | S2 | FC2 | R00 | ACF05 | 044 |  |  |  |  |  |  |  |  |  | FA | 40 |  |  |  |  |  |  |  |  |  |  |  |  |  |
| T10CO04405C0 |  | PT-10 ; C2 Transom & Mullion (Common Zone) | 42d | 2011-09-05 A | 2011-11-10 | T10CO04403C0 FF+14d | 22% | 32.76d | 2011-09-26 | 2011-11-17 | 39.79d | 0d | FACADE CURTAIN WALL 2 [2823.4 h]; Cost |  |  | T10CO04405C0 | PT | C | 10 | CO | FA | 044 | 05 | BILL 10 | B10 | S2 | FC2 | R00 | ACF05 | 044 |  |  |  |  |  |  |  |  |  | FA | 22 |  |  |  |  |  |  |  |  |  |  |  |  |  |
| T10CO04407C0 |  | PT-10 ; C2 Glazing (Common Zone) | 42d | 2011-09-05 A | 2011-11-10 | T10CO04405C0 FF, T10CO04405C0 SS | 22% | 32.76d | 2011-09-26 | 2011-11-17 | 39.79d | 0d | FACADE CURTAIN WALL 2 [4766.9 h]; FACADE CURTAIN WALL 2 [1742 m2]; FACADE TOTAL QUANTITY m2 [1742 m2]; Cost |  |  | T10CO04407C0 | PT | C | 10 | CO | FA | 044 | 07 | BILL 10 | B10 | S2 | FC2 | R00 | ACF05 | 044 |  |  |  |  |  |  |  |  |  | FA | 22 |  |  |  |  |  |  |  |  |  |  |  |  |  |
| T10CO04415C0 |  | PT-10 ; SG Catwalk Installation (Common Zone) | 52d | 2012-01-09 | 2012-03-11 | TEXCO04403C0 SS+14d |  |  |  |  | 65.03d | 0d | Labor General [4687.6 h]; Cost |  |  | I05CO04411C0 | PT | C | 10 | CO | FA | 044 | 11 | BILL 10 | B10 | S2 | SG | R00 | ACF05 | 044 |  |  |  |  |  |  |  |  |  | FA |  |  |  |  |  |  |  |  |  |  |  |  |  |  |
|  | 02 | **PAT RM-1** |  | 2011-06-19 | 2012-12-13 |  |  |  |  |  |  |  |  |  |  |  |  |  |  |  |  |  |  |  |  |  |  |  |  |  |  |  |  |  |  |  |  |  |  |  |  |  |  |  |  |  |  |  |  |  |  |  |  |  |
| T10P123001C0 |  | PT-10 ; 1st Fix, Inst. of Supports for MEP (PAT RM-1) | 120d | 2011-06-19 A | 2011-10-22 | T10CO07807C0 | 85% | 18d | 2011-07-10 | 2011-12-05 | 44.65d | 0d | MECHANICAL [1834.8 h]; Cost [45150.4 AED] | 45,150.38 | 38,377.83 | T10P123001C0 | PT | C | 10 | P1 | ME | 230 | 01 | BILL 10 | B10 | S2 | 1F | R00 | ACF04 | 230 |  |  |  |  |  |  |  |  | 5998.41 | MEP | 85 | 0 | 0 | 0 | 0 | 25 | 85 | 15 | 1S | M1F |  |  |  |  |
| T10P126001C0 |  | PT-10 ; 1st Fix, Inst of Trunking/Conduiting (PAT RM-1) | 36d | 2011-06-19 A | 2011-10-22 | T10CO07807C0, T10P123001C0 SS | 50% | 18d | 2011-08-07 | 2011-09-20 | 55.15d | 0d | ELECTRICAL [734.4 h]; Cost [37790.1 AED] | 37,790.1 | 18,895.05 | T10P126001C0 | PT | C | 10 | P1 | ME | 260 | 01 | BILL 10 | B10 | S2 | 1F | R00 | ACF04 | 260 |  |  |  |  |  |  |  |  | 4438.43 | MEP |  | 0 | 0 | 0 | 0 | 25 | 20 | 10 | 1S | M1F |  |  |  |  |
| T10P109201C0 |  | PT-10 ; Metal Studs (PAT RM-1) | 36d | 2011-07-05 A | 2011-11-10 | T10P123001C0 SS, T10P123001C0 FF, T10CO04407C0 FF, T10CO04405C0 FF | 50% | 18d | 2011-09-15 | 2011-10-26 | 40.99d | 0d | PARTITIONS [3551 h]; PARTITIONS - Metal Studs [493 m]; Cost |  |  | T10P109201C0 | PT | C | 10 | P1 | PT | 092 | 01 | BILL 10 | B10 | S2 | 1F | R00 | ACF06 | 092 |  |  |  |  |  |  |  |  |  | GP |  | 0 | 0 | 0 | 0 |  |  |  |  | PMS | 313 | 944 |  |  |
| T10P121111C0 |  | PT-10 ; 1st Fix, Inst of Sprinkler main pipe (PAT RM-1) | 36d | 2011-07-05 A | 2011-10-22 | T10P122005C0 SS, T10P123001C0 SS | 50% | 18d | 2011-11-05 | 2011-12-22 | 55.15d | 14.16d | MECHANICAL [1386 h]; Cost [46582.2 AED] | 46,582.17 | 23,291.08 | T10P121111C0 | PT | C | 10 | P1 | ME | 211 | 11 | BILL 10 | B10 | S2 | 1F | R00 | ACF04 | 211 |  |  |  |  |  |  |  |  |  | MEP |  |  |  |  |  |  | 50 | 10 | 1S | M1F |  |  |  |  |
| T10P122019C0 |  | PT-10 ; 1st Fix, Inst of Drainage pipe (ceiling) (PAT RM-1) | 36d | 2011-07-06 A | 2011-10-26 | T10P123001C0 SS, T10P126013C0 SS | 40% | 21.6d | 2011-10-11 | 2011-11-27 | 55.15d | 0d | PLUMBING [1378.8 h]; Cost [74493.8 AED] | 74,493.83 | 29,797.53 | T10P122019C0 | PT | C | 10 | P1 | ME | 220 | 19 | BILL 10 | B10 | S2 | 1F | R00 | ACF04 | 220 |  |  |  |  |  |  |  |  |  | MEP | 35 | 0 | 0 | 0 | 0 | 20 | 30 | 5 | 1S | M1F |  |  |  |  |
| T10P126013C0 |  | PT-10 ; 1st Fix, Inst of Cable Tray (PAT RM-1) | 36d | 2011-07-06 A | 2011-10-17 | T10CO07807C0, T10P123001C0 SS, T10P127010C0 SS | 60% | 14.4d | 2011-09-25 | 2011-11-09 | 55.15d | 0d | ELECTRICAL [399.6 h]; Cost [21571.3 AED] | 21,571.27 | 12,942.76 | T10P126013C0 | PT | C | 10 | P1 | ME | 260 | 13 | BILL 10 | B10 | S2 | 1F | R00 | ACF04 | 260 |  |  |  |  |  |  |  |  |  | MEP |  | 0 | 0 | 0 | 0 | 20 |  |  | 1S | M1F |  |  |  |  |
| T10P109203C0 |  | PT-10 ; Partitions 1st face (PAT RM-1) | 36d | 2011-08-10 A | 2011-12-17 | T10P109201C0 | 20% | 28.8d | 2011-11-29 | 2012-01-12 | 60.19d | 35.44d | PARTITIONS [493 m]; PARTITIONS [2772 h]; Cost |  |  | T10P109203C0 | PT | C | 10 | P1 | PT | 092 | 03 | BILL 10 | B10 | S2 | 2F | R00 | ACF06 | 092 |  |  |  |  |  |  |  |  |  | GP |  |  |  |  |  |  | 20 | 0 |  | P1F | 314 | 945 |  |  |
| T10P122005C0 |  | PT-10 ; 1st Fix, Inst of Water supply pipe (ceiling) (PAT RM-1) | 60d | 2011-08-10 A | 2011-11-30 | T10P122019C0 SS, T10P123001C0 SS | 20% | 48d | 2011-09-12 | 2011-11-24 | 55.15d | 0d | PLUMBING [4548 h]; Cost [245665 AED] | 245,664.7 | 49,132.94 | T10P122005C0 | PT | C | 10 | P1 | ME | 220 | 05 | BILL 10 | B10 | S2 | 1F | R00 | ACF04 | 220 |  |  |  |  |  |  |  |  |  | MEP | 20 | 0 | 0 | 0 | 0 |  | 20 | 0 | 1S | M1F |  |  |  |  |
| T10P126009C0 |  | PT-10 ; 2nd Fix, Inst of Wall conduites (PAT RM-1) | 42d | 2011-08-10 A | 2011-12-25 | T10P109201C0 | 15% | 35.7d | 2012-02-01 | 2012-03-21 | 47.29d | 7.5d | ELECTRICAL [734.4 h]; Cost [37790.1 AED] | 37,790.1 | 5,668.51 | T10P126009C0 | PT | C | 10 | P1 | ME | 260 | 09 | BILL 10 | B10 | S2 | 2F | R00 | ACF07 | 260 |  |  |  |  |  |  |  |  | 17753.73 | MEP |  |  |  |  |  | 35 | 15 | 0 | 2n |  |  |  |  |  |
| T10P127010C0 |  | PT-10 ; 1st Fix, Inst of Trunking for ELV system (PAT RM-1) | 54d | 2011-08-10 A | 2011-10-13 | T10CO07807C0, T10P123001C0 SS, T10P126001C0 SS | 80% | 10.78d | 2011-08-27 | 2011-10-31 | 55.15d | 0d | ELECTRICAL [1512 h]; Cost [79240.1 AED] | 79,240.08 | 63,392.06 | T10P127010C0 | PT | C | 10 | P1 | ME | 270 | 10 | BILL 10 | B10 | S2 | 1F | R00 | ACF04 | 270 |  |  |  |  |  |  |  |  |  | MEP | 20 | 0 | 0 | 0 | 0 | 20 | 10 | 0 | 1S | M1F |  |  |  |  |
| T10P122011C0 |  | PT-10 ; 2nd Fix, Drainage/Water pipe (wall) (PAT RM-1) | 42d | 2011-09-05 A | 2011-12-18 | T10P109201C0, TAFWA00102M0 | 30% | 29.4d | 2011-11-17 | 2012-01-09 | 53.59d | 13.8d | PLUMBING [1378.8 h]; Cost [74493.8 AED] | 74,493.83 | 22,348.15 | T10P122011C0 | PT | C | 10 | P1 | ME | 220 | 11 | BILL 10 | B10 | S2 | 2F | R00 | ACF07 | 220 |  |  |  |  |  |  |  |  |  | MEP | 10 |  |  |  |  |  |  |  | 2n |  |  |  |  |  |
| T10P126007C0 |  | PT-10 ; 2nd Fix, Cable Pulling (PAT RM-1) | 48d | 2011-09-05 A | 2012-01-03 | T10P109201C0 SS+6d, TAFWA00102M0 | 10% | 43.2d | 2011-11-17 | 2012-01-16 | 39.79d | 0d | ELECTRICAL [2683.2 h]; Cost [134522 AED] | 134,521.96 | 13,452.2 | T10P126007C0 | PT | C | 10 | P1 | ME | 260 | 07 | BILL 10 | B10 | S2 | 2F | R00 | ACF07 | 260 |  |  |  |  |  |  |  |  |  | MEP |  |  |  |  |  |  |  |  | 2n |  |  |  |  |  |
| T10P122007C0 |  | PT-10 ; 1st Fix, Inst of Medical Gas pipe (PAT RM-1) | 48d | 2011-10-22 | 2011-12-22 | T10P121111C0 SS+14d, T10P123001C0 |  |  |  |  | 55.15d | 14.16d | PLUMBING [1149.6 h]; Cost |  |  | T10P122007C0 | PT | C | 10 | P1 | ME | 220 | 07 | BILL 10 | B10 | S2 | 1F | R00 | ACF04 | 220 |  |  |  |  |  |  |  |  |  | MEP |  |  |  |  |  |  |  |  | 1S | M1F |  |  |  |  |
| T10P123017C0 |  | PT-10 ; 1st Fix, Inst of CHW pipe (PAT RM-1) | 60d | 2011-10-22 | 2012-01-07 | T10P121111C0 SS+12d, T10P123001C0, T10P105503C0 FF+18d |  |  |  |  | 44.65d | 0d | MECHANICAL [5694 h]; Cost |  |  | T10P123017C0 | PT | C | 10 | P1 | ME | 230 | 17 | BILL 10 | B10 | S2 | 1F | R00 | ACF04 | 230 |  |  |  |  |  |  |  |  |  | MEP |  |  |  |  |  |  |  |  | 1S | M1F |  |  |  |  |
| T10P127001C0 |  | PT-10 ; 1st Fix, Wiring/ Cabling work (PAT RM-1) | 48d | 2011-10-22 | 2011-12-22 | T10P126001C0, T10P126013C0, T10P127010C0 |  |  |  |  | 146.65d | 108.4d | ELECTRICAL [392.4 h]; Cost |  |  | T10P127001C0 | PT | C | 10 | P1 | ME | 270 | 01 | BILL 10 | B10 | S2 | 1F | R00 | ACF04 | 270 |  |  |  |  |  |  |  |  |  | MEP |  |  |  |  |  |  |  |  | 1S | M1F |  |  |  |  |
| T10P123023C0 |  | PT-10 ; 1st Fix, Inst of Main Ducting (PAT RM-1) | 60d | 2011-10-30 | 2012-01-15 | T10P123001C0, T10P123017C0 SS+7d |  |  |  |  | 79.65d | 0d | MECHANICAL [8022 h]; Cost |  |  | T10P123023C0 | PT | C | 10 | P1 | ME | 230 | 23 | BILL 10 | B10 | S2 | 1F | R00 | ACF04 | 230 |  |  |  |  |  |  |  |  |  | MEP |  |  |  |  |  |  |  |  | 1S | M1F |  |  |  |  |
| T10P121117C0 |  | PT-10 ; 1st Fix, Inst of Sprinkler branch pipe (PAT RM-1) | 48d | 2011-11-10 | 2012-01-09 | T10P109201C0, T10P121111C0, T10P105503C0 FF+18d |  |  |  |  | 40.99d | 16.24d | MECHANICAL [561.6 h]; Cost |  |  | T10P121117C0 | PT | C | 10 | P1 | ME | 211 | 17 | BILL 10 | B10 | S2 | 1F | R00 | ACF04 | 211 |  |  |  |  |  |  |  |  |  | MEP |  |  |  |  |  |  |  |  | 1S | M1F |  |  |  |  |
| T10P122015C0 |  | PT-10 ; 2nd Fix, Medical Gas pipe (PAT RM-1) | 42d | 2011-11-10 | 2012-01-02 | T10P109201C0, T10P122007C0 SS, TAFWA00102M0 |  |  |  |  | 40.99d | 1.2d | PLUMBING [1149.6 h]; Cost |  |  | T10P122015C0 | PT | C | 10 | P1 | ME | 220 | 15 | BILL 10 | B10 | S2 | 2F | R00 | ACF07 | 220 |  |  |  |  |  |  |  |  |  | MEP |  |  |  |  |  |  |  |  | 2n |  |  |  |  |  |
| T10P105503C0 |  | PT-10 ; Ceiling Support for medical equipment (PAT RM-1) | 24d | 2011-11-15 | 2011-12-14 | T10P109201C0, TAFCI22011R20 FS+58d |  |  |  |  | 43.75d | 0.6d | SECONDARY STEEL [62 h]; STRUCTURAL STEEL [28 T(Fe)]; Cost |  |  | D03EY05503C0 | PT | C | 10 | P1 | SW | 055 | 03 | BILL 10 | B10 | S2 | 03 | R00 | ACF03 | b |  |  |  |  |  |  |  |  |  |  |  |  |  |  |  |  |  |  |  |  | 335 | 962 |  |  |
| T10P109702C0 |  | PT-10 ; Installation of Bathroom Pods (PAT RM-1) | 0d | 2011-12-11 | 2011-12-11 | T10CO07807C0, AAFCI09201R02 FS+118d |  |  |  |  | 113.75d | 0d | Cost |  |  | T10P109701C0 | PT | C | 10 | P1 | BP | 097 | 01 | BILL 10 | B10 | S2 | FG | R00 | ACF06 | 097 |  |  |  |  |  |  |  |  |  |  |  |  |  |  |  |  |  |  |  |  | 105 | 1002 |  |  |
| T10P108103C0 |  | PT-10 ; Door Frames (PAT RM-1) | 36d | 2011-12-28 | 2012-02-09 | T10P109201C0, TAFWA00102M0, GNHE08101C0 FS+126d |  |  |  |  | 62.75d | 38d | ASSORTED DOORS [303 h]; Cost |  |  | T10P108103C0 | PT | C | 10 | P1 | DO | 081 | 03 | BILL 10 | B10 | S2 | DF | R00 | ACF06 | 081 |  |  |  |  |  |  |  |  |  |  |  |  |  |  |  |  |  |  |  |  | 316 | 947 | 08 |  |
| T10P105511C0 |  | PT-10 ; Wall reinforcement for MEP/Medical (PAT RM-1) | 24d | 2011-12-31 | 2012-01-28 | T10P109201C0, TAFCI22011R02 FS+58d |  |  |  |  | 24.75d | 0d | SECONDARY STEEL [26 h]; Cost |  |  | T10P105511C0 | PT | C | 10 | P1 | SW | 055 | 11 | BILL 10 | B10 | S2 | 03 | R00 | ACF03 | b |  |  |  |  |  |  |  |  |  |  |  |  |  |  |  |  |  |  |  |  |  |  |  |  |
| T10P101005C0 |  | PT-10 ; 2nd, Wall Inspection by Consultant (PAT RM-1) | 6d | 2012-01-03 | 2012-01-10 | T10P122011C0, T10P122015C0, T10P126007C0, T10P126009C0 |  |  |  |  | 39.79d | 15.04d | Labor General [1.2 h]; Cost |  |  | T10P101005C0 | PT | C | 10 | P1 | ME | 010 | 05 | BILL 10 | B10 | S2 | WI | R00 | ACF07 | 010 |  |  |  |  |  |  |  |  |  | MEP |  |  |  |  |  |  |  |  | 2n |  |  |  |  |  |
| T10P123009C0 |  | PT-10 ; 2nd Fix, Inst of VAV'S CHW connection (PAT RM-1) | 42d | 2012-01-07 | 2012-02-26 | T10P123017C0 |  |  |  |  | 44.65d | 0d | MECHANICAL [1450.8 h]; Cost |  |  | T10P123009C0 | PT | C | 10 | P1 | ME | 230 | 09 | BILL 10 | B10 | S2 | 2F | R00 | ACF07 | 230 |  |  |  |  |  |  |  |  |  | MEP |  |  |  |  |  |  |  |  | 2n |  |  |  |  |  |
| T10P123008C0 |  | PT-10 ; 1st Fix, Inst of VCD's/FD's (PAT RM-1) | 48d | 2012-01-15 | 2012-03-12 | T10P123023C0, T10P105503C0 FF+18d |  |  |  |  | 79.65d | 41.4d | MECHANICAL [1753.2 h]; Cost |  |  | T10P123008C0 | PT | C | 10 | P1 | ME | 230 | 08 | BILL 10 | B10 | S2 | 1F | R00 | ACF04 | 230 |  |  |  |  |  |  |  |  |  | MEP |  |  |  |  |  |  |  |  | 1S | M1F |  |  |  |  |
| T10P109205C0 |  | PT-10 ; Partitions Closing (PAT RM-1) | 48d | 2012-01-29 | 2012-03-25 | T10P101005C0, T10P105511C0, T10P109203C0, T10P122005C0, T10P122019C0, TAFOA09214C1 FF, T10P109702C0 FF, T10P108103C0 FF, T10P121117C0 |  |  |  |  | 24.75d | 0d | PARTITIONS [493 m]; PARTITIONS [3563 h]; Cost |  |  | T10P109205C0 | PT | C | 10 | P1 | PT | 092 | 05 | BILL 10 | B10 | S2 | FF | R00 | ACF06 | 092 |  |  |  |  |  |  |  |  |  | GP |  |  |  |  |  |  |  |  |  | P2F | 315 | 946 |  |  |
| T10P123015C0 |  | PT-10 ; 2nd Fix, Insulation of CHW pipe & Duct (PAT RM-1) | 48d | 2012-02-26 | 2012-04-22 | T10P123009C0, T10P123017C0, T10P123023C0 |  |  |  |  | 44.65d | 6.4d | MECHANICAL [3064.8 h]; Cost |  |  | T10P123015C0 | PT | C | 10 | P1 | ME | 230 | 15 | BILL 10 | B10 | S2 | 2F | R00 | ACF07 | 230 |  |  |  |  |  |  |  |  |  | MEP |  |  |  |  |  |  |  |  | 2n |  |  |  |  |  |
| T10P107103C0 |  | PT-10 ; Waterproofing (PAT RM-1) | 11.88d | 2012-03-26 | 2012-04-08 | T10P108103C0, T10P109205C0 |  |  |  |  | 137.25d | 38.12d | THERMAL & MOISTURE [504 h]; THERMAL & MOISTURE [3326 m2]; Cost |  |  | T10P107103C0 | PT | C | 10 | P1 | FF | 071 | 03 | BILL 10 | B10 | S2 | 01 | R00 | ACF03 | 071 |  |  |  |  |  |  |  |  |  |  |  |  |  |  |  |  |  |  |  |  | 105 | 999 |  |  |
| T10P109901C0 |  | PT-10 ; Wall Prime & 1st coat (PAT RM-1) | 30d | 2012-03-26 | 2012-04-29 | T10P109205C0 |  |  |  |  | 24.75d | 0d | WALL PAINT [587 h]; WALL PAINT [731 m2]; Cost |  |  | T10P109901C0 | PT | C | 10 | P1 | PA | 099 | 01 | BILL 10 | B10 | S2 | 01 | R00 | ACF06 | 099 |  |  |  |  |  |  |  |  |  |  |  |  |  |  |  |  |  |  |  |  | 328 | 956 |  |  |
| T10P126005C0 |  | PT-10 ; 2nd Fix, Wiring for Power/Lighting/Emergency (PAT RM-1) | 42d | 2012-03-26 | 2012-05-13 | T10P109205C0 |  |  |  |  | 108.88d | 0d | ELECTRICAL [392.4 h]; Cost |  |  | T10P126005C0 | PT | C | 10 | P1 | ME | 260 | 05 | BILL 10 | B10 | S2 | 2F | R00 | ACF07 | 260 |  |  |  |  |  |  |  |  |  | MEP |  |  |  |  |  |  |  |  | 2n |  |  |  |  |  |
| T10P126011C0 |  | PT-10 ; 2nd Fix, Inst of Equipment (DB) (PAT RM-1) | 54d | 2012-03-26 | 2012-05-27 | T10P109205C0 |  |  |  |  | 125.13d | 62d | ELECTRICAL [878.4 h]; Cost |  |  | T10P126011C0 | PT | C | 10 | P1 | ME | 260 | 11 | BILL 10 | B10 | S2 | 2F | R00 | ACF04 | 260 |  |  |  |  |  |  |  |  |  | MEP |  |  |  |  |  |  |  |  | 2n |  |  |  |  | E |
| T10P126053C0 |  | PT-10 ; 2nd Fix, Wiring / Cabling (PAT RM-1) | 42d | 2012-03-26 | 2012-05-13 | T10P109203C0, T10P109205C0 |  |  |  |  | 46.25d | 8d | ELECTRICAL [392.4 h]; Cost |  |  | T10P126053C0 | PT | C | 10 | P1 | ME | 260 | 53 | BILL 10 | B10 | S2 | 2F | R00 | ACF07 | 260 |  |  |  |  |  |  |  |  |  | MEP |  |  |  |  |  |  |  |  | 2n |  | 389 | 977 |  |  |
| T10P105501C0 |  | PT-10 ; Handrails & balustrade (PAT RM-1) | 33.5d | 2012-04-30 | 2012-06-07 | T10P109901C0 |  |  |  |  | 24.75d | 0d | SECONDARY STEEL [230 h]; Cost |  |  | T10P105501C0 | PT | C | 10 | P1 | SW | 055 | 01 | BILL 10 | B10 | S2 | 01 | R00 | ACF03 | a |  |  |  |  |  |  |  |  |  |  |  |  |  |  |  |  |  |  |  |  |  |  |  |  |
| T10P109501C0 |  | PT-10 ; Ceiling Grid and Service Tile (PAT RM-1) | 20d | 2012-04-30 | 2012-05-22 | T10P105503C0, T10P109205C0 SS+15d, T10P121117C0, T10P123008C0, T10P123009C0, T10P123015C0, T10P127001C0, T10P126053C0 FF, T10P109901C0 |  |  |  |  | 38.25d | 0d | CEILING GRID FOR GYPSUM [4870 h]; CEILING GRID FOR GYPSUM [416.8 m2]; Cost |  |  | T10P109501C0 | PT | C | 10 | P1 | CE | 095 | 01 | BILL 10 | B10 | S2 | 01 | R00 | ACF06 | 095 |  |  |  |  |  |  |  |  |  |  |  |  |  |  |  |  |  |  |  |  | 323 | 952 |  |  |
| T10P109510C0 |  | PT-10 ; Patient Lift Ceiling Rail (by others) (PAT RM-1) | 30d | 2012-04-30 | 2012-06-03 | T10P109501C0 SS |  |  |  |  | 132.88d | 87.5d | Labor General [0.2 h]; Cost |  |  | I06P109501C0 | PT | C | 10 | P1 | CE | 095 | 10 | BILL 10 | B10 | S2 | 02 | R00 | ACF06 | 095 |  |  |  |  |  |  |  |  |  |  |  |  |  |  |  |  |  |  |  |  | 323 | 952 |  |  |
| T10P126015C0 |  | PT-10 ; Final Fix, Termination & Gladding of Cables (PAT RM-1) | 36d | 2012-05-14 | 2012-06-25 | T10P126005C0 |  |  |  |  | 108.88d | 56d | ELECTRICAL [148.8 h]; Cost |  |  | T10P126015C0 | PT | C | 10 | P1 | ME | 260 | 15 | BILL 10 | B10 | S2 | FF | R00 | ACF07 | 260 |  |  |  |  |  |  |  |  |  | MEP |  |  |  |  |  |  |  |  | FF |  |  |  |  |  |
| T10P109305C0 |  | PT-10 ; Flooring (Terrazzo) (PAT RM-1) | 30d | 2012-05-23 | 2012-06-27 | T10P107103C0, T10P109501C0 |  |  |  |  | 99.13d | 0d | TERRAZO FLOOR [1427 m2]; TERRAZO FLOOR [2568 h]; Cost |  |  | T10P109305C0 | PT | C | 10 | P1 | FF | 096 | 05 | BILL 10 | B10 | S2 | 07 | R00 | ACF06 | TZ |  |  |  |  |  |  |  |  |  |  |  |  |  |  |  |  |  |  |  |  | 106 | 1000 |  |  |
| T10P109905C0 |  | PT-10 ; Ceiling Prime & 1st coat (PAT RM-1) | 30d | 2012-05-23 | 2012-06-27 | T10P109501C0 |  |  |  |  | 129.13d | 0d | CEILING PAINT [36 h]; CEILING PAINT [43 m2]; Cost |  |  | T10P109905C0 | PT | C | 10 | P1 | PA | 099 | 05 | BILL 10 | B10 | S2 | 01 | R00 | ACF06 | 099 |  |  |  |  |  |  |  |  |  |  |  |  |  |  |  |  |  |  |  |  | 330 | 958 |  |  |
| T10P121115C0 |  | PT-10 ; 2nd Fix, Inst of Sprinkler droppers (PAT RM-1) | 42d | 2012-05-23 | 2012-07-11 | T10P109501C0 |  |  |  |  | 58.88d | 0d | MECHANICAL [1602 h]; Cost |  |  | T10P121115C0 | PT | C | 10 | P1 | ME | 211 | 15 | BILL 10 | B10 | S2 | 2F | R00 | ACF07 | 211 |  |  |  |  |  |  |  |  |  | MEP |  |  |  |  |  |  |  |  | 2n |  |  |  |  |  |
| T10P123021C0 |  | PT-10 ; 2nd Fix, Inst of Flexible Duct & Plenum boxes (PAT RM-1) | 42d | 2012-05-23 | 2012-07-11 | T10P109205C0, T10P109501C0 |  |  |  |  | 58.88d | 0d | MECHANICAL [30 h]; Cost |  |  | T10P123021C0 | PT | C | 10 | P1 | ME | 230 | 21 | BILL 10 | B10 | S2 | 2F | R00 | ACF07 | 230 |  |  |  |  |  |  |  |  |  | MEP |  |  |  |  |  |  |  |  | 2n |  |  |  |  |  |
| T10P126017C0 |  | PT-10 ; Final Fix, Inst of Ceiling rose (PAT RM-1) | 36d | 2012-05-23 | 2012-07-04 | T10P109501C0 |  |  |  |  | 52.88d | 0d | ELECTRICAL [61.2 h]; Cost |  |  | T10P126017C0 | PT | C | 10 | P1 | ME | 260 | 17 | BILL 10 | B10 | S2 | FF | R00 | ACF07 | 260 |  |  |  |  |  |  |  |  |  | MEP |  |  |  |  |  |  |  |  | FF |  |  |  |  |  |
| T10P127002C0 |  | PT-10 ; 2nd Fix, Wiring Droppers (PAT RM-1) | 42d | 2012-05-23 | 2012-07-11 | T10P109501C0 |  |  |  |  | 52.88d | 0d | ELECTRICAL [392.4 h]; Cost |  |  | T10P127002C0 | PT | C | 10 | P1 | ME | 270 | 02 | BILL 10 | B10 | S2 | 2F | R00 | ACF07 | 270 |  |  |  |  |  |  |  |  |  | MEP |  |  |  |  |  |  |  |  | 2n |  |  |  |  |  |
| T10P127020C0 |  | PT-10 ; 2nd Fix, Inst of ELV Equipment (Panels) (PAT RM-1) | 66d | 2012-05-23 | 2012-08-08 | T10P109205C0, T10P109501C0 |  |  |  |  | 63.13d | 0d | ELECTRICAL [1819.2 h]; Cost |  |  | T10P127020C0 | PT | C | 10 | P1 | ME | 270 | 20 | BILL 10 | B10 | S2 | 2F | R00 | ACF04 | 270 |  |  |  |  |  |  |  |  |  | MEP |  |  |  |  |  |  |  |  | 2n |  |  |  |  | E |
| T10P140303C0 |  | PT-10 ; Final Fix, Pneumatic Station (PAT RM-1) | 36d | 2012-05-23 | 2012-07-04 | T10P109501C0 |  |  |  |  | 141.13d | 95.75d | MECHANICAL [2974.8 h]; Cost |  |  | T10P140303C0 | PT | C | 10 | P1 | ME | 403 | 03 | BILL 10 | B10 | S2 | FF | R00 | ACF07 | 403 |  |  |  |  |  |  |  |  |  | MEP |  |  |  |  |  |  |  |  | FF |  |  |  |  |  |
| T10P109601C0 |  | PT-10 ; Flooring (Rubber & etc) (PAT RM-1) | 30d | 2012-06-07 | 2012-07-14 | T10P109501C0, T10P105501C0 |  |  |  |  | 24.75d | 0d | RUBBER FLOOR [32 h]; RUBBER FLOOR [73 m2]; Cost |  |  | T10P109601C0 | PT | C | 10 | P1 | FF | 096 | 01 | BILL 10 | B10 | S2 | 03 | R00 | ACF06 | RF |  |  |  |  |  |  |  |  |  |  |  |  |  |  |  |  |  |  |  |  | 326 | 955 |  |  |
| T10P109903C0 |  | PT-10 ; Wall Final Paint (PAT RM-1) | 30d | 2012-06-28 | 2012-08-01 | T10P109901C0, T10P109905C0, T10P109501C0 |  |  |  |  | 129.13d | 72d | WALL PAINT [316 h]; WALL PAINT [394 m2]; Cost |  |  | T10P109903C0 | PT | C | 10 | P1 | PA | 099 | 03 | BILL 10 | B10 | S2 | 02 | R00 | ACF06 | 099 |  |  |  |  |  |  |  |  |  |  |  |  |  |  |  |  |  |  |  |  | 329 | 957 |  |  |
| T10P122025C0 |  | PT-10 ; Final Fix, Inst of Sanitary Ware (PAT RM-1) | 42d | 2012-06-28 | 2012-08-15 | T10P109205C0, T10P109305C0 |  |  |  |  | 99.13d | 0d | PLUMBING [3690 h]; Cost |  |  | T10P122025C0 | PT | C | 10 | P1 | ME | 220 | 25 | BILL 10 | B10 | S2 | FF | R00 | ACF07 | 220 |  |  |  |  |  |  |  |  |  | MEP |  |  |  |  |  |  |  |  | FF |  |  |  |  |  |
| T10P122021C0 |  | PT-10 ; Final Fix, Terminate Sanitary Ware & Appliances (PAT RM-1) | 42d | 2012-07-05 | 2012-08-25 | T10P122011C0, T10P122025C0 SS+6d |  |  |  |  | 99.13d | 53.75d | PLUMBING [3361.2 h]; Cost |  |  | T10P122021C0 | PT | C | 10 | P1 | ME | 220 | 21 | BILL 10 | B10 | S2 | FF | R00 | ACF07 | 220 |  |  |  |  |  |  |  |  |  | MEP |  |  |  |  |  |  |  |  | FF |  |  |  |  |  |
| T10P126003C0 |  | PT-10 ; Final Fix, Inst of Light fittings (PAT RM-1) | 48d | 2012-07-05 | 2012-09-01 | T10P109501C0, T10P126017C0 |  |  |  |  | 52.88d | 0d | ELECTRICAL [7815.6 h]; Cost |  |  | T10P126003C0 | PT | C | 10 | P1 | ME | 260 | 03 | BILL 10 | B10 | S2 | FF | R00 | ACF07 | 260 |  |  |  |  |  |  |  |  |  | MEP |  |  |  |  |  |  |  |  | FF |  |  |  |  |  |
| T10P121113C0 |  | PT-10 ; Final Fix, Inst of Sprinklers head/ Extinguisher (PAT RM-1) | 36d | 2012-07-12 | 2012-08-25 | T10P109501C0, T10P121115C0 |  |  |  |  | 58.88d | 6d | MECHANICAL [234 h]; Cost |  |  | T10P121113C0 | PT | C | 10 | P1 | ME | 211 | 13 | BILL 10 | B10 | S2 | FF | R00 | ACF07 | 211 |  |  |  |  |  |  |  |  |  | MEP |  |  |  |  |  |  |  |  | FF |  |  |  |  |  |
| T10P123019C0 |  | PT-10 ; Final Fix, Inst of Grilles & Diffusers (PAT RM-1) | 36d | 2012-07-12 | 2012-08-25 | T10P109501C0, T10P123021C0 |  |  |  |  | 58.88d | 6d | MECHANICAL [1498.8 h]; Cost |  |  | T10P123019C0 | PT | C | 10 | P1 | ME | 230 | 19 | BILL 10 | B10 | S2 | FF | R00 | ACF07 | 230 |  |  |  |  |  |  |  |  |  | MEP |  |  |  |  |  |  |  |  | FF |  |  |  |  |  |

| ID | WBS | Activity | Duration | Start | Finish | Predecessors | Complete | Remaining | Planned start | Planned finish | Total float | Free float | Resources | Cost | Actual cost | change id | CCAD BUILDING(SET) | CCAD PHASE(SET) | CCAD FLOOR(SET) | CCAD ZONE(SET) | CCAD WORK(SET) | CCAD SECTION(SET) | CCAD SERIAL No.(SET) | CCAD SUB ZONE MEP(SET) | CCAD CBS(SET) | CCAD BILL(SET) | CCAD HANDOVER(SET) | CCAD TAG(SET) | CCAD REV(SET) | CCADACF (SET) | CCAD CSA | CCAD SSCF | Change Order # | NEW ACTIVITY ID | CCAD DIVISION(SET) | user_number8 | user_integer1 | user_integer2 | user_number7 | July2011 Target% Complete | Claimed This Month | U% | Act Selector % | P_811 | P_711 | CCAD MEQ |
| --- | --- | --- | --- | --- | --- | --- | --- | --- | --- | --- | --- | --- | --- | --- | --- | --- | --- | --- | --- | --- | --- | --- | --- | --- | --- | --- | --- | --- | --- | --- | --- | --- | --- | --- | --- | --- | --- | --- | --- | --- | --- | --- | --- | --- | --- | --- |
| T10P127030C0 |  | PT-10 ; Final Fix, Inst of ELV device (Detector/Speaker) (PAT RM-1) | 42d | 2012-07-12 | 2012-09-01 | T10P109501C0, T10P127002C0 |  |  |  |  | 52.88d | 0d | ELECTRICAL [3571.2 h]; Cost |  |  | T10P127030C0 | PT | C | 10 | P1 | ME | 270 | 30 | FF | BILL 10 | B10 | S2 | FF | R00 | ACF07 | MEP | 270 |  |  |  |  |  |  |  |  |  |  |  |  |  |  |
| T10P106101C0 |  | PT-10 ; Wood / caseworks (PAT RM-1) | 54d | 2012-07-14 | 2012-09-17 | T10CO04407C0, T10P109501C0, T10P109601C0, T10P109901C0, TAFWA00101M0 |  |  |  |  | 24.75d | 0d | WOOD WORK/CASEWORK [873.9 no]; WOOD WORK/CASEWORK [1915 h]; Cost |  |  | T10P106101C0 | PT | C | 10 | P1 | WO | 061 | 01 |  | BILL 10 | B10 | S2 | WW | R00 | ACF06 |  | 061 | 332 | 960 |  |  |  |  |  |  |  |  |  |  |  |  |
| T10P106102C0 |  | PT-10 ; Head/Foot Wall (PAT RM-1) | 54d | 2012-07-14 | 2012-09-17 | OGNMU00031S0, T10CO04407C0, T10P109501C0, TAFWA00101M0, T10P106101C0 SS |  |  |  |  | 61.63d | 0d | WOOD WORK/CASEWORK [1664 h]; Cost |  |  | T10P106102C0 | PT | C | 10 | P1 | WO | 061 | 02 |  | BILL 10 | B10 | S2 | WW | R00 | ACF06 |  | 061 | 332 | 960 |  |  |  |  |  |  |  |  |  |  |  |  |
| T10P108107C0 |  | PT-10 ; Doors (PAT RM-1) | 36d | 2012-07-14 | 2012-08-27 | T10P108103C0, T10P109501C0, T10P109601C0, T10P109901C0 |  |  |  |  | 81.25d | 0d | ASSORTED DOORS [610 h]; ASSORTED DOORS [61 no]; Cost |  |  | T10P108107C0 | PT | C | 10 | P1 | DO | 081 | 07 |  | BILL 10 | B10 | S2 | DR | R00 | ACF06 |  | 081 | 317 | 948 | 08 |  |  |  |  |  |  |  |  |  |  |  |
| T10P109701C0 |  | PT-10 ; Wall finishes (ST, WD, WC) (PAT RM-1) | 36d | 2012-08-09 | 2012-09-22 | T10P126011C0, T10P127020C0, T10P109501C0, T10P109305C0, T10P109601C0 |  |  |  |  | 63.13d | 0d | ASSORTED WALL FINISH [519 h]; ASSORTED WALL FINISH [595 m2]; Cost |  |  | T10P109701C0 | PT | C | 10 | P1 | WF | 097 | 01 |  | BILL 10 | B10 | S2 | 01 | R00 | ACF06 |  | 097 | 105 | 1002 |  |  |  |  |  |  |  |  |  |  |  |  |
| T10P108709C0 |  | PT-10 ; Ironmongery (PAT RM-1) | 28.38d | 2012-08-27 | 2012-09-29 | T10P108107C0 |  |  |  |  | 81.25d | 35.88d | IRONMONGERY [870 h]; IRONMONGERY [87 no]; Cost |  |  | T10P108709C0 | PT | C | 10 | P1 | DO | 087 | 09 |  | BILL 10 | B10 | S2 | IM | R00 | ACF06 |  | 087 | 322 | 951 | 08 |  |  |  |  |  |  |  |  |  |  |  |
| T10P101006C0 |  | PT-10 ; 2nd, Ceiling Inspection by Consultants (PAT RM-1) | 6d | 2012-09-02 | 2012-09-08 | T10P121115C0, T10P123009C0, T10P123015C0, T10P127002C0, T10P109501C0, T10P121113C0, T10P123019C0, T10P126015C0, T10P126017C0, T10P126003C0, T10P127030C0 |  |  |  |  | 52.88d | 7.5d | Labor General [1.2 h]; Cost |  |  | T10P101006C0 | PT | C | 10 | P1 | ME | 010 | 06 | 2n | BILL 10 | B10 | S2 | CI | R00 | ACF07 | MEP | 010 |  |  |  |  |  |  |  |  |  |  |  |  |  |  |
| T10P109503C0 |  | PT-10 ; Ceiling closure - ACT/Gypsum (PAT RM-1) | 16.25d | 2012-09-17 | 2012-10-06 | T10P101006C0, T10P109510C0, T10P121115C0, T10P126005C0, T10P127001C0, T10P127002C0, TAFOA09513C1 FF, T10P106101C0, T10P123021C0 |  |  |  |  | 45.38d | 0d | ASSORTED CEILING FINISH [549.81 h]; CEILING GYPSUM [136.74 h]; ASSORTED CEILING FINISH [894 m2]; CEILING GYPSUM [417 m2]; Cost |  |  | T10P109503C0 | PT | C | 10 | P1 | CE | 095 | 03 |  | BILL 10 | B10 | S2 | 02 | R00 | ACF06 |  | 095 | 324 | 953 |  |  |  |  |  |  |  |  |  |  |  |  |
| T10P122029C0 |  | PT-10 ; Final Fix, Medical Gas pipe (PAT RM-1) | 18d | 2012-09-17 | 2012-10-08 | T10P109501C0, T10P106102C0 |  |  |  |  | 61.63d | 16.25d | PLUMBING [1149.6 h]; Cost |  |  | T10P122029C0 | PT | C | 10 | P1 | ME | 220 | 29 | FF | BILL 10 | B10 | S2 | FF | R00 | ACF07 | MEP | 220 |  |  |  |  |  |  |  |  |  |  |  |  |  |  |
| T10P111001C0 |  | PT-10 ; Wall Protection (WP, CG, WG, FCG) (PAT RM-1) | 24d | 2012-09-23 | 2012-10-20 | T10P109701C0, T10P109903C0 SS |  |  |  |  | 63.13d | 17.75d | FF&E [27 h]; Cost |  |  | T10P111001C0 | PT | C | 10 | P1 | WF | 110 | 01 |  | BILL 10 | B10 | S2 | 03 | R00 | ACF08 |  | b | 326 | 1001 |  |  |  |  |  |  |  |  |  |  |  |  |
| T10F209670C1 |  | PT-10, Carpet Tile Finish (Patient Room-1) | 0d | 2012-10-06 | 2012-10-06 | T10P109903C0 SS, T10P109907C0 SS |  |  |  |  | 75.38d | 30d | Cost |  |  |  | PT | C | 10 | F2 | FF | 096 |  |  |  | B10 |  |  | R00 | ACF06 | CPT | CPT |  |  |  |  |  |  |  |  |  |  |  |  |  |  |
| T10P109907C0 |  | PT-10 ; Ceiling Final paint (PAT RM-1) | 18d | 2012-10-06 | 2012-10-29 | T10P109601C0, T10P109905C0, T10P109503C0 |  |  |  |  | 57.38d | 0d | CEILING PAINT [20 h]; CEILING PAINT [23 m2]; Cost |  |  | T10P109907C0 | PT | C | 10 | P1 | PA | 099 | 07 |  | BILL 10 | B10 | S2 | 02 | R00 | ACF06 |  | 099 | 331 | 959 |  |  |  |  |  |  |  |  |  |  |  |  |
| T10P111003C0 |  | PT-10 ; FF & E (PAT RM-1) | 18d | 2012-10-06 | 2012-10-29 | T10P109601C0, T10P106101C0, T10P109503C0 |  |  |  |  | 57.38d | 12d | FF&E [1067 h]; Cost |  |  | T10P111003C0 | PT | C | 10 | P1 | WO | 110 | 03 |  | BILL 10 | B10 | S2 | 04 | R00 | ACF08 |  | a | 333 | 961 |  |  |  |  |  |  |  |  |  |  |  |  |
| T10P122027C0 |  | PT-10 ; Final Fix, Inst of All drain (PAT RM-1) | 18d | 2012-10-06 | 2012-10-29 | T10P109305C0, T10P109503C0 |  |  |  |  | 45.38d | 0d | PLUMBING [1378.8 h]; Cost |  |  | T10P122027C0 | PT | C | 10 | P1 | ME | 220 | 27 | FF | BILL 10 | B10 | S2 | FF | R00 | ACF07 | MEP | 220 |  |  |  |  |  |  |  |  |  |  |  |  |  |  |
| T10P126019C0 |  | PT-10 ; Final Fix, Inst of Switch/Sockets (PAT RM-1) | 18d | 2012-10-06 | 2012-10-29 | T10P109901C0, T10P109503C0 |  |  |  |  | 45.38d | 0d | ELECTRICAL [362.4 h]; Cost |  |  | T10P126019C0 | PT | C | 10 | P1 | ME | 260 | 19 | FF | BILL 10 | B10 | S2 | FF | R00 | ACF07 | MEP | 260 |  |  |  |  |  |  |  |  |  |  |  |  |  |  |
|  | 10 | **Precommissioning Tesing & snagging (PAT RM-1)** |  | 2012-10-29 | 2012-12-13 |  |  |  |  |  |  |  |  |  |  |  |  |  |  |  |  |  |  |  |  |  |  |  |  |  |  |  |  |  |  |  |  |  |  |  |  |  |  |  |  |  |
| T10TS01801C0 |  | PT-10 ; MEP de-snag, FIREM sign-off | 12d | 2012-10-29 | 2012-11-12 | T10P122025C0, T10P122027C0, T10P126015C0, T10P121113C0, T10P123019C0, T10P140303C0, T10P122021C0, T10P122029C0, T10P126017C0, T10P126003C0, T10P127030C0, T10P126019C0 |  |  |  |  | 45.38d | 0d | TESTING & COMMISSIONING [2040 h]; Cost |  |  | T10TS01801C0 | PT | C | 10 | TS | SC | 018 | 01 |  | BILL 10 | B10 | S2 | 01 | R00 | ACF07 |  | 018 |  |  |  |  |  |  |  |  |  |  |  |  |  |  |
| T10TS01806C0 |  | PT-10 ; Touch-up & Clean / JV inspection /CIR /De-snag | 18d | 2012-11-12 | 2012-12-05 | T10P106101C0, T10P106102C0, T10P108709C0, T10P109305C0, T10P109501C0, T10P109503C0, T10P109601C0, T10P109701C0, T10P109903C0, T10P109907C0, T10P111001C0, T10P111003C0, T10TS01801C0, T10CO04415C0, T10P105501C0, T10P209680C1, T10F209670C1 |  |  |  |  | 45.38d | 0d | TESTING & COMMISSIONING [128 h]; Cost |  |  | T10TS01802C0 | PT | C | 10 | TS | SC | 018 | 02 |  | BILL 10 | B10 | S2 | 02 | R00 | ACF07 |  | 018 |  |  |  |  |  |  |  |  |  |  |  |  |  |  |
| T10TS01809C0 |  | PT-10 ; Consultant's final de-snag inspection | 7d | 2012-12-05 | 2012-12-13 | T10TS01806C0, T10TS01811C0 |  |  |  |  | 45.38d | 22.27d | Labor General [1 h]; Cost |  |  | T10TS01803C0 | PT | C | 10 | TS | SC | 018 | 03 |  | BILL 10 | B10 | S2 | 03 | R00 | ACF07 |  | 018 |  |  |  |  |  |  |  |  |  |  |  |  |  |  |
|  | 03 | **PAT RM-2** |  | 2011-06-19 | 2013-01-17 |  |  |  |  |  |  |  |  |  |  |  |  |  |  |  |  |  |  |  |  |  |  |  |  |  |  |  |  |  |  |  |  |  |  |  |  |  |  |  |  |  |
| T10P226001C0 |  | PT-10 ; 1st Fix, Inst of Trunking/Conduiting (PAT RM-2) | 36d | 2011-06-19 A | 2011-11-03 | T10CO07807C0, T10P223001C0 SS | 20% | 28.8d | 2011-08-07 | 2011-09-20 | 85.85d | 0d | ELECTRICAL [734.4 h]; Cost [37790.1 AED] | 37,790.1 | 7,558.02 | T10P226001C0 | PT | C | 10 | P2 | ME | 260 | 01 | 1S | BILL 10 | B10 | S2 | 1F | R00 | ACF04 | MEP | 260 |  |  |  | 0 | 0 | 0 | 0 | 25 | 4438.43 | 20 | M1F |  |  |  |
| T10P223001C0 |  | PT-10 ; 1st Fix, Inst. of Supports for MEP (PAT RM-2) | 120d | 2011-06-26 A | 2011-10-22 | T10CO07807C0 | 85% | 18d | 2011-07-10 | 2011-12-05 | 45.65d | 0d | MECHANICAL [800.4 h]; Cost [45150.4 AED] | 45,150.38 | 38,377.83 | T10P223001C0 | PT | C | 10 | P2 | ME | 230 | 01 | 1S | BILL 10 | B10 | S2 | 1F | R00 | ACF04 | MEP | 230 |  |  |  | 0 | 0 | 0 | 0 | 25 | 2618.72 | 85 | M1F | 85 | 20 |  |
| T10P209201C0 |  | PT-10 ; Metal Studs (PAT RM-2) | 36d | 2011-07-05 A | 2011-11-15 | T10P223001C0, T10CO04407C0 FF, T10CO04405C0 FF | 50% | 18d | 2011-09-22 | 2011-11-02 | 45.65d | 0d | PARTITIONS [2367 h]; PARTITIONS - Metal Studs [328 m]; Cost |  |  | T10P209201C0 | PT | C | 10 | P2 | PT | 092 | 01 |  | BILL 10 | B10 | S2 | 1F | R00 | ACF06 | GP | 092 | 313 | 944 |  | 0 | 0 | 0 | 0 |  |  |  | PMS |  |  |  |
| T10P222019C0 |  | PT-10 ; 1st Fix, Inst of Drainage pipe (ceiling) (PAT RM-2) | 36d | 2011-07-05 A | 2011-10-26 | T10P223001C0 SS, T10P226013C0 SS | 40% | 21.6d | 2011-10-11 | 2011-11-27 | 85.85d | 0d | PLUMBING [1378.8 h]; Cost [74493.8 AED] | 74,493.83 | 29,797.53 | T10P222019C0 | PT | C | 10 | P2 | ME | 220 | 19 | 1S | BILL 10 | B10 | S2 | 1F | R00 | ACF04 | MEP | 220 |  |  |  | 0 | 0 | 0 | 0 | 25 |  | 35 | M1F | 30 | 10 |  |
| T10P226013C0 |  | PT-10 ; 1st Fix, Inst of Cable Tray (PAT RM-2) | 36d | 2011-07-05 A | 2011-11-03 | T10CO07807C0, T10P223001C0 SS, T10P227010C0 SS | 20% | 28.8d | 2011-09-25 | 2011-11-09 | 85.85d | 0d | ELECTRICAL [399.6 h]; Cost [21571.3 AED] | 21,571.27 | 4,314.25 | T10P226013C0 | PT | C | 10 | P2 | ME | 260 | 13 | 1S | BILL 10 | B10 | S2 | 1F | R00 | ACF04 | MEP | 260 |  |  |  | 0 | 0 | 0 | 0 |  |  | 20 | M1F | 11 | 10 |  |
| T10P227010C0 |  | PT-10 ; 1st Fix, Inst of Trunking for ELV system (PAT RM-2) | 36d | 2011-07-05 A | 2011-11-03 | T10CO07807C0, T10P223001C0 SS, T10P226001C0 SS | 20% | 28.8d | 2011-09-11 | 2011-10-23 | 85.85d | 0d | ELECTRICAL [1512 h]; Cost [79240.1 AED] | 79,240.08 | 15,848.02 | T10P227010C0 | PT | C | 10 | P2 | ME | 270 | 10 | 1S | BILL 10 | B10 | S2 | 1F | R00 | ACF04 | MEP | 270 |  |  |  | 0 | 0 | 0 | 0 | 25 |  | 20 | M1F |  |  |  |
| T10P221111C0 |  | PT-10 ; 1st Fix, Inst of Sprinkler main pipe (PAT RM-2) | 36d | 2011-07-06 A | 2011-10-17 | T10P222005C0 SS, T10P223001C0 SS | 60% | 14.4d | 2011-11-05 | 2011-12-22 | 85.85d | 18d | MECHANICAL [853.2 h]; Cost [46582.2 AED] | 46,582.17 | 27,949.3 | T10P221111C0 | PT | C | 10 | P2 | ME | 211 | 11 | 1S | BILL 10 | B10 | S2 | 1F | R00 | ACF04 | MEP | 211 |  |  |  | 0 | 0 | 0 | 0 |  |  | 50 | M1F | 30 | 10 |  |
| T10P209203C0 |  | PT-10 ; Partitions 1st face (PAT RM-2) | 36d | 2011-08-10 A | 2011-12-19 | T10P209201C0 | 25% | 27d | 2011-11-29 | 2012-01-12 | 72.65d | 33.4d | PARTITIONS [328 m]; PARTITIONS [1854 h]; Cost |  |  | T10P209203C0 | PT | C | 10 | P2 | PT | 092 | 03 |  | BILL 10 | B10 | S2 | 2F | R00 | ACF06 | GP | 092 | 314 | 945 |  | 0 | 0 | 0 | 0 |  |  |  | P1F | 20 | 0 |  |
| T10P222005C0 |  | PT-10 ; 1st Fix, Inst of Water supply pipe (ceiling) (PAT RM-2) | 36d | 2011-08-10 A | 2011-11-01 | T10P222019C0 SS, T10P223001C0 SS | 25% | 27d | 2011-08-27 | 2011-10-10 | 85.85d | 0d | PLUMBING [4548 h]; Cost [245665 AED] | 245,664.7 | 61,416.18 | T10P222005C0 | PT | C | 10 | P2 | ME | 220 | 05 | 1S | BILL 10 | B10 | S2 | 1F | R00 | ACF04 | MEP | 220 |  |  |  | 0 | 0 | 0 | 0 | 25 |  | 25 | M1F | 20 | 0 |  |
| T10P223017C0 |  | PT-10 ; 1st Fix, Inst of CHW pipe (PAT RM-2) | 54d | 2011-09-05 A | 2012-01-07 | T10P221111C0 SS+12d, T10P223001C0, T10P205503C0 FF+18d | 30% | 37.8d | 2011-09-22 | 2011-11-29 | 45.65d | 0d | MECHANICAL [2467.2 h]; Cost [134718 AED] | 134,717.86 | 40,415.36 | T10P223017C0 | PT | C | 10 | P2 | ME | 230 | 17 | 1S | BILL 10 | B10 | S2 | 1F | R00 | ACF04 | MEP | 230 |  |  |  |  |  |  |  |  |  | 20 | M1F |  |  |  |
| T10P222007C0 |  | PT-10 ; 1st Fix, Inst of Medical Gas pipe (PAT RM-2) | 48d | 2011-10-22 | 2011-12-22 | T10P221111C0 SS+14d, T10P223001C0 |  |  |  |  | 69.65d | 18d | PLUMBING [1149.6 h]; Cost |  |  | T10P222007C0 | PT | C | 10 | P2 | ME | 220 | 07 | 1S | BILL 10 | B10 | S2 | 1F | R00 | ACF04 | MEP | 220 |  |  |  |  |  |  |  |  |  |  | M1F |  |  |  |
| T10P227001C0 |  | PT-10 ; 1st Fix, Wiring/ Cabling work (PAT RM-2) | 48d | 2011-11-03 | 2012-01-05 | T10P226001C0, T10P226013C0, T10P227010C0 |  |  |  |  | 136.85d | 97.6d | ELECTRICAL [392.4 h]; Cost |  |  | T10P227001C0 | PT | C | 10 | P2 | ME | 270 | 01 | 1S | BILL 10 | B10 | S2 | 1F | R00 | ACF04 | MEP | 270 |  |  |  |  |  |  |  |  |  |  | M1F |  |  |  |
| T10P205503C0 |  | PT-10 ; Ceiling Support for medical equipment (PAT RM-2) | 24d | 2011-11-15 | 2011-12-15 | T10P209201C0, TAFCI22011R20 FS+58d |  |  |  |  | 45.65d | 0d | SECONDARY STEEL [72 h]; STRUCTURAL STEEL [29 T(Fe)]; Cost |  |  | D03EY05503C0 | PT | C | 10 | P2 | SW | 055 | 03 |  | BILL 10 | B10 | S2 | 03 | R00 | ACF03 |  | b | 335 | 962 |  |  |  |  |  |  |  |  |  |  |  |  |
| T10P221117C0 |  | PT-10 ; 1st Fix, Inst of Sprinkler branch pipe (PAT RM-2) | 48d | 2011-11-15 | 2012-01-14 | T10P209201C0, T10P221111C0, T10P205503C0 FF+18d |  |  |  |  | 99.65d | 60.4d | MECHANICAL [561.6 h]; Cost |  |  | T10P221117C0 | PT | C | 10 | P2 | ME | 211 | 17 | 1S | BILL 10 | B10 | S2 | 1F | R00 | ACF04 | MEP | 211 |  |  |  |  |  |  |  |  |  |  | M1F |  |  |  |
| T10P222011C0 |  | PT-10 ; 2nd Fix, Drainage/Water pipe (wall) (PAT RM-2) | 42d | 2011-11-15 | 2012-01-07 | T10P209201C0 |  |  |  |  | 51.65d | 0d | PLUMBING [1378.8 h]; Cost |  |  | T10P222011C0 | PT | C | 10 | P2 | ME | 220 | 11 | 2n | BILL 10 | B10 | S2 | 2F | R00 | ACF07 | MEP | 220 |  |  |  |  |  |  |  |  |  |  |  |  |  |  |
| T10P222015C0 |  | PT-10 ; 2nd Fix, Medical Gas pipe (PAT RM-2) | 42d | 2011-11-15 | 2012-01-07 | T10P209201C0, T10P222007C0 SS |  |  |  |  | 51.65d | 0d | PLUMBING [1149.6 h]; Cost |  |  | T10P222015C0 | PT | C | 10 | P2 | ME | 220 | 15 | 2n | BILL 10 | B10 | S2 | 2F | R00 | ACF07 | MEP | 220 |  |  |  |  |  |  |  |  |  |  |  |  |  |  |
| T10P226009C0 |  | PT-10 ; 2nd Fix, Inst of Wall conduites (PAT RM-2) | 42d | 2011-11-15 | 2012-01-07 | T10P209201C0 |  |  |  |  | 51.65d | 0d | ELECTRICAL [734.4 h]; Cost |  |  | T10P226009C0 | PT | C | 10 | P2 | ME | 260 | 09 | 2n | BILL 10 | B10 | S2 | 2F | R00 | ACF07 | MEP | 260 |  |  |  |  |  |  |  |  |  |  |  |  |  |  |
| T10P223023C0 |  | PT-10 ; 1st Fix, Inst of Main Ducting (PAT RM-2) | 60d | 2011-11-20 | 2012-02-01 | T10P223001C0, T10P223017C0 SS+10d |  |  |  |  | 65.45d | 0d | MECHANICAL [8022 h]; Cost |  |  | T10P223023C0 | PT | C | 10 | P2 | ME | 230 | 23 | 1S | BILL 10 | B10 | S2 | 1F | R00 | ACF04 | MEP | 230 |  |  |  |  |  |  |  |  |  |  | M1F |  |  |  |
| T10P209702C0 |  | PT-10 ; Installation of Bathroom Pods (PAT RM-2) | 0d | 2011-12-11 | 2011-12-11 | T10P109702C0 SS, T10CO07807C0, AAFCI09201R02 FS+118d |  |  |  |  | 128.25d | 0d | Cost |  |  | T10P109701C0 | PT | C | 10 | P2 | BP | 097 | 01 |  | BILL 10 | B10 | S2 | FG | R00 | ACF06 |  | 097 | 105 | 1002 |  |  |  |  |  |  |  |  |  |  |  |  |
| T10P208103C0 |  | PT-10 ; Door Frames (PAT RM-2) | 36d | 2011-12-28 | 2012-02-09 | T10P209201C0, GNHE08101C0 FS+126d |  |  |  |  | 77.25d | 38d | ASSORTED DOORS [215 h]; Cost |  |  | T10P208103C0 | PT | C | 10 | P2 | DO | 081 | 03 |  | BILL 10 | B10 | S2 | DF | R00 | ACF06 |  | 081 | 316 | 947 | 08 |  |  |  |  |  |  |  |  |  |  |  |
| T10P205511C0 |  | PT-10 ; Wall reinforcement for MEP/Medical (PAT RM-2) | 24d | 2011-12-31 | 2012-01-28 | T10P209201C0, TAFCI22011R02 FS+58d |  |  |  |  | 39.25d | 0d | SECONDARY STEEL [31 h]; Cost |  |  | T10P205511C0 | PT | C | 10 | P2 | SW | 055 | 11 |  | BILL 10 | B10 | S2 | 03 | R00 | ACF03 |  | b |  |  |  |  |  |  |  |  |  |  |  |  |  |  |
| T10P201005C0 |  | PT-10 ; 2nd, Wall Inspection by Consultant (PAT RM-2) | 6d | 2012-01-07 | 2012-01-14 | T10P222011C0, T10P222015C0, T10P226009C0 |  |  |  |  | 51.65d | 12.4d | Labor General [1.2 h]; Cost |  |  | T10P201005C0 | PT | C | 10 | P2 | ME | 010 | 05 | 2n | BILL 10 | B10 | S2 | WI | R00 | ACF07 | MEP | 010 |  |  |  |  |  |  |  |  |  |  |  |  |  |  |
| T10P223009C0 |  | PT-10 ; 2nd Fix, Inst of VAV'S CHW connection (PAT RM-2) | 42d | 2012-01-07 | 2012-02-26 | T10P223017C0 |  |  |  |  | 45.65d | 0d | MECHANICAL [1450.8 h]; Cost |  |  | T10P223009C0 | PT | C | 10 | P2 | ME | 230 | 09 | 2n | BILL 10 | B10 | S2 | 2F | R00 | ACF07 | MEP | 230 |  |  |  |  |  |  |  |  |  |  |  |  |  |  |
| T10P209205C0 |  | PT-10 ; Partitions Closing (PAT RM-2) | 48d | 2012-01-29 | 2012-03-25 | T10P201005C0, T10P205511C0, T10P209203C0, T10P222005C0, T10P222019C0, TAFOA09214C1 FF, T10P209702C0 FF, T10P208103C0 FF, T10P221117C0 FF |  |  |  |  | 39.25d | 0d | PARTITIONS [328 m]; PARTITIONS [2369 h]; Cost |  |  | T10P209205C0 | PT | C | 10 | P2 | PT | 092 | 05 |  | BILL 10 | B10 | S2 | FF | R00 | ACF06 | GP | 092 | 315 | 946 |  |  |  |  |  |  |  |  | P2F |  |  |  |
| T10P223008C0 |  | PT-10 ; 1st Fix, Inst of VCD's/FD's (PAT RM-2) | 48d | 2012-02-01 | 2012-03-29 | T10P223023C0, T10P205503C0 FF+18d |  |  |  |  | 65.45d | 26.2d | MECHANICAL [1753.2 h]; Cost |  |  | T10P223008C0 | PT | C | 10 | P2 | ME | 230 | 08 | 1S | BILL 10 | B10 | S2 | 1F | R00 | ACF04 | MEP | 230 |  |  |  |  |  |  |  |  |  |  | M1F |  |  |  |
| T10P223015C0 |  | PT-10 ; 2nd Fix, Insulation of CHW pipe & Duct (PAT RM-2) | 48d | 2012-02-26 | 2012-04-22 | T10P223009C0, T10P223017C0, T10P223023C0 |  |  |  |  | 45.65d | 6.4d | MECHANICAL [3064.8 h]; Cost |  |  | T10P223015C0 | PT | C | 10 | P2 | ME | 230 | 15 | 2n | BILL 10 | B10 | S2 | 2F | R00 | ACF07 | MEP | 230 |  |  |  |  |  |  |  |  |  |  |  |  |  |  |
| T10P207103C0 |  | PT-10 ; Waterproofing (PAT RM-2) | 11.88d | 2012-03-26 | 2012-04-08 | T10P208103C0, T10P209205C0 |  |  |  |  | 108.25d | 42.12d | THERMAL & MOISTURE [384 h]; THERMAL & MOISTURE [2509 m2]; Cost |  |  | T10P207103C0 | PT | C | 10 | P2 | FF | 071 | 03 |  | BILL 10 | B10 | S2 | 01 | R00 | ACF03 |  | 071 | 105 | 999 |  |  |  |  |  |  |  |  |  |  |  |  |
| T10P209901C0 |  | PT-10 ; Wall Prime & 1st coat (PAT RM-2) | 30d | 2012-03-26 | 2012-04-29 | T10P209205C0 |  |  |  |  | 39.25d | 0d | WALL PAINT [415 h]; WALL PAINT [517 m2]; Cost |  |  | T10P209901C0 | PT | C | 10 | P2 | PA | 099 | 01 |  | BILL 10 | B10 | S2 | 01 | R00 | ACF06 |  | 099 | 328 | 956 |  |  |  |  |  |  |  |  |  |  |  |  |
| T10P226005C0 |  | PT-10 ; 2nd Fix, Wiring for Power/Lighting/Emergency (PAT RM-2) | 42d | 2012-03-26 | 2012-05-13 | T10P209205C0 |  |  |  |  | 112.88d | 0d | ELECTRICAL [392.4 h]; Cost |  |  | T10P226005C0 | PT | C | 10 | P2 | ME | 260 | 05 | 2n | BILL 10 | B10 | S2 | 2F | R00 | ACF07 | MEP | 260 |  |  |  |  |  |  |  |  |  |  |  |  |  |  |
| T10P226007C0 |  | PT-10 ; 2nd Fix, Cable Pulling (PAT RM-2) | 48d | 2012-03-26 | 2012-05-20 | T10P209201C0 SS+6d, T10P209205C0 |  |  |  |  | 148.88d | 104.5d | ELECTRICAL [2683.2 h]; Cost |  |  | T10P226007C0 | PT | C | 10 | P2 | ME | 260 | 07 | 2n | BILL 10 | B10 | S2 | 2F | R00 | ACF07 | MEP | 260 |  |  |  |  |  |  |  |  |  |  |  |  |  |  |
| T10P226011C0 |  | PT-10 ; 2nd Fix, Inst of Equipment (DB) (PAT RM-2) | 54d | 2012-03-26 | 2012-05-27 | T10P209205C0 |  |  |  |  | 132.13d | 66d | ELECTRICAL [878.4 h]; Cost |  |  | T10P226011C0 | PT | C | 10 | P2 | ME | 260 | 11 | 2n | BILL 10 | B10 | S2 | 2F | R00 | ACF04 | MEP | 260 |  |  |  |  |  |  |  |  |  |  |  |  |  | E |
| T10P226053C0 |  | PT-10 ; 2nd Fix, Wiring / Cabling (PAT RM-2) | 42d | 2012-03-26 | 2012-05-13 | T10P209203C0, T10P209205C0 |  |  |  |  | 51.25d | 12d | ELECTRICAL [392.4 h]; Cost |  |  | T10P226053C0 | PT | C | 10 | P2 | ME | 260 | 53 | 2n | BILL 10 | B10 | S2 | 2F | R00 | ACF07 | MEP | 260 | 389 | 977 |  |  |  |  |  |  |  |  |  |  |  |  |
| T10P205501C0 |  | PT-10 ; Handrails & balustrade (PAT RM-2) | 33.5d | 2012-04-30 | 2012-06-07 | T10P209901C0 |  |  |  |  | 59.75d | 20.5d | SECONDARY STEEL [174 h]; Cost |  |  | T10P205501C0 | PT | C | 10 | P2 | SW | 055 | 01 |  | BILL 10 | B10 | S2 | 01 | R00 | ACF03 |  | a |  |  |  |  |  |  |  |  |  |  |  |  |  |  |
| T10P209501C0 |  | PT-10 ; Ceiling Grid and Service Tile (PAT RM-2) | 24d | 2012-04-30 | 2012-05-27 | T10P205503C0, T10P209205C0 SS+15d, T10P221117C0, T10P223008C0, T10P223009C0, T10P223015C0, T10P227001C0, T10P226053C0 FF, T10P209901C0 |  |  |  |  | 39.25d | 0d | CEILING GRID FOR GYPSUM [3691.46 h]; CEILING GRID FOR GYPSUM [315.76 m2]; Cost |  |  | T10P209501C0 | PT | C | 10 | P2 | CE | 095 | 01 |  | BILL 10 | B10 | S2 | 01 | R00 | ACF06 |  | 095 | 323 | 952 |  |  |  |  |  |  |  |  |  |  |  |  |
| T10P209510C0 |  | PT-10 ; Patient Lift Ceiling Rail (by others) (PAT RM-2) | 30d | 2012-04-30 | 2012-06-03 | T10P209501C0 SS |  |  |  |  | 136.88d | 92.5d | Labor General [0.2 h]; Cost |  |  | I06P109501C0 | PT | C | 10 | P2 | CE | 095 | 10 |  | BILL 10 | B10 | S2 | 02 | R00 | ACF06 |  | 095 | 323 | 952 |  |  |  |  |  |  |  |  |  |  |  |  |
| T10P226015C0 |  | PT-10 ; Final Fix, Termination & Gladding of Cables (PAT RM-2) | 36d | 2012-05-14 | 2012-06-25 | T10P226005C0 |  |  |  |  | 112.88d | 60d | ELECTRICAL [148.8 h]; Cost |  |  | T10P226015C0 | PT | C | 10 | P2 | ME | 260 | 15 | FF | BILL 10 | B10 | S2 | FF | R00 | ACF07 | MEP | 260 |  |  |  |  |  |  |  |  |  |  |  |  |  |  |
| T10P209305C0 |  | PT-10 ; Flooring (Terrazzo) (PAT RM-2) | 30d | 2012-05-28 | 2012-07-02 | T10P207103C0, T10P209501C0 |  |  |  |  | 66.13d | 0d | TERRAZO FLOOR [1073 m2]; TERRAZO FLOOR [1936 h]; Cost |  |  | T10P209305C0 | PT | C | 10 | P2 | FF | 096 | 05 |  | BILL 10 | B10 | S2 | 07 | R00 | ACF06 |  | TZ | 106 | 1000 |  |  |  |  |  |  |  |  |  |  |  |  |
| T10P209601C0 |  | PT-10 ; Flooring (Rubber & etc) (PAT RM-2) | 30d | 2012-05-28 | 2012-07-02 | T10P209501C0, T10P205501C0 FF |  |  |  |  | 39.25d | 0d | RUBBER FLOOR [24 h]; RUBBER FLOOR [55 m2]; Cost |  |  | T10P209601C0 | PT | C | 10 | P2 | FF | 096 | 01 |  | BILL 10 | B10 | S2 | 03 | R00 | ACF06 |  | RF | 326 | 955 |  |  |  |  |  |  |  |  |  |  |  |  |
| T10P209905C0 |  | PT-10 ; Ceiling Prime & 1st coat (PAT RM-2) | 30d | 2012-05-28 | 2012-07-02 | T10P209501C0 |  |  |  |  | 132.13d | 0d | CEILING PAINT [28 h]; CEILING PAINT [33 m2]; Cost |  |  | T10P209905C0 | PT | C | 10 | P2 | PA | 099 | 05 |  | BILL 10 | B10 | S2 | 01 | R00 | ACF06 |  | 099 | 330 | 958 |  |  |  |  |  |  |  |  |  |  |  |  |
| T10P221115C0 |  | PT-10 ; 2nd Fix, Inst of Sprinkler droppers (PAT RM-2) | 42d | 2012-05-28 | 2012-07-16 | T10P209501C0 |  |  |  |  | 58.88d | 0d | MECHANICAL [1602 h]; Cost |  |  | T10P221115C0 | PT | C | 10 | P2 | ME | 211 | 15 | 2n | BILL 10 | B10 | S2 | 2F | R00 | ACF07 | MEP | 211 |  |  |  |  |  |  |  |  |  |  |  |  |  |  |
| T10P223021C0 |  | PT-10 ; 2nd Fix, Inst of Flexible Duct & Plenum boxes (PAT RM-2) | 42d | 2012-05-28 | 2012-07-16 | T10P209205C0, T10P209501C0 |  |  |  |  | 58.88d | 0d | MECHANICAL [30 h]; Cost |  |  | T10P223021C0 | PT | C | 10 | P2 | ME | 230 | 21 | 2n | BILL 10 | B10 | S2 | 2F | R00 | ACF07 | MEP | 230 |  |  |  |  |  |  |  |  |  |  |  |  |  |  |
| T10P226017C0 |  | PT-10 ; Final Fix, Inst of Ceiling rose (PAT RM-2) | 36d | 2012-05-28 | 2012-07-09 | T10P209501C0 |  |  |  |  | 52.88d | 0d | ELECTRICAL [61.2 h]; Cost |  |  | T10P226017C0 | PT | C | 10 | P2 | ME | 260 | 17 | FF | BILL 10 | B10 | S2 | FF | R00 | ACF07 | MEP | 260 |  |  |  |  |  |  |  |  |  |  |  |  |  |  |
| T10P227002C0 |  | PT-10 ; 2nd Fix, Wiring Droppers (PAT RM-2) | 42d | 2012-05-28 | 2012-07-16 | T10P209501C0 |  |  |  |  | 52.88d | 0d | ELECTRICAL [392.4 h]; Cost |  |  | T10P227002C0 | PT | C | 10 | P2 | ME | 270 | 02 | 2n | BILL 10 | B10 | S2 | 2F | R00 | ACF07 | MEP | 270 |  |  |  |  |  |  |  |  |  |  |  |  |  |  |
| T10P227020C0 |  | PT-10 ; 2nd Fix, Inst of ELV Equipment (Panels) (PAT RM-2) | 66d | 2012-05-28 | 2012-08-13 | T10P209205C0, T10P209501C0 |  |  |  |  | 66.13d | 0d | ELECTRICAL [1819.2 h]; Cost |  |  | T10P227020C0 | PT | C | 10 | P2 | ME | 270 | 20 | 2n | BILL 10 | B10 | S2 | 2F | R00 | ACF04 | MEP | 270 |  |  |  |  |  |  |  |  |  |  |  |  |  | E |
| T10P240303C0 |  | PT-10 ; Final Fix, Pneumatic Station (PAT RM-2) | 36d | 2012-05-28 | 2012-07-09 | T10P209501C0 |  |  |  |  | 144.13d | 99.75d | MECHANICAL [2974.8 h]; Cost |  |  | T10P240303C0 | PT | C | 10 | P2 | ME | 403 | 03 | FF | BILL 10 | B10 | S2 | FF | R00 | ACF07 | MEP | 403 |  |  |  |  |  |  |  |  |  |  |  |  |  |  |
| T10P208107C0 |  | PT-10 ; Doors (PAT RM-2) | 36d | 2012-07-03 | 2012-08-13 | T10P208103C0, T10P209501C0, T10P209601C0, T10P209901C0 |  |  |  |  | 99.63d | 0d | ASSORTED DOORS [430 h]; ASSORTED DOORS [43 no]; Cost |  |  | T10P208107C0 | PT | C | 10 | P2 | DO | 081 | 07 |  | BILL 10 | B10 | S2 | DR | R00 | ACF06 |  | 081 | 317 | 948 | 08 |  |  |  |  |  |  |  |  |  |  |  |
| T10P209903C0 |  | PT-10 ; Wall Final Paint (PAT RM-2) | 30d | 2012-07-03 | 2012-08-06 | T10P209901C0, T10P209905C0, T10P209501C0 |  |  |  |  | 132.13d | 72d | WALL PAINT [225 h]; WALL PAINT [279 m2]; Cost |  |  | T10P209903C0 | PT | C | 10 | P2 | PA | 099 | 03 |  | BILL 10 | B10 | S2 | 02 | R00 | ACF06 |  | 099 | 329 | 957 |  |  |  |  |  |  |  |  |  |  |  |  |
| T10P222025C0 |  | PT-10 ; Final Fix, Inst of Sanitary Ware (PAT RM-2) | 42d | 2012-07-03 | 2012-08-22 | T10P209205C0, T10P209305C0 |  |  |  |  | 66.13d | 0d | PLUMBING [3361.2 h]; Cost |  |  | T10P222025C0 | PT | C | 10 | P2 | ME | 220 | 25 | FF | BILL 10 | B10 | S2 | FF | R00 | ACF07 | MEP | 220 |  |  |  |  |  |  |  |  |  |  |  |  |  |  |
| T10P226003C0 |  | PT-10 ; Final Fix, Inst of Light fittings (PAT RM-2) | 48d | 2012-07-10 | 2012-09-05 | T10P209501C0, T10P226017C0 |  |  |  |  | 52.88d | 0d | ELECTRICAL [7815.6 h]; Cost |  |  | T10P226003C0 | PT | C | 10 | P2 | ME | 260 | 03 | FF | BILL 10 | B10 | S2 | FF | R00 | ACF07 | MEP | 260 |  |  |  |  |  |  |  |  |  |  |  |  |  |  |
| T10P221113C0 |  | PT-10 ; Final Fix, Inst of Sprinklers head/ Extinguisher (PAT RM-2) | 36d | 2012-07-17 | 2012-08-29 | T10P209501C0, T10P221115C0 |  |  |  |  | 58.88d | 6d | MECHANICAL [234 h]; Cost |  |  | T10P221113C0 | PT | C | 10 | P2 | ME | 211 | 13 | FF | BILL 10 | B10 | S2 | FF | R00 | ACF07 | MEP | 211 |  |  |  |  |  |  |  |  |  |  |  |  |  |  |

| ID | WBS | Activity | Duration | Start | Finish | Predecessors | Complete | Remaining | Planned start | Planned finish | Total float | Free float | Resources | Cost | Actual cost | change id | CCAD BUILDING(SET) | CCAD PHASE(SET) | CCAD FLOOR(SET) | CCAD ZONE(SET) | CCAD WORK(SET) | CCAD SECTION(SET) | CCAD SERIAL No.(SET) | CCAD SUB ZONE MEP(SET) | CCAD CBS(SET) | CCAD BILL(SET) | CCAD HANDOVER(SET) | CCAD TAG(SET) | CCAD REV(SET) | CCADACF (SET) | CCAD CSA | CCAD SSCF | Change Order # | NEW ACTIVITY ID | CCAD DIVISION(SET) | user_number8 | user_integer1 | user_integer2 | user_number7 | July2011 Target% Complete | Claimed This Month | U% | Act Selector % | P_811 | P_711 | R3 Partitions | CCAD MEQ | R3 Finish |
| --- | --- | --- | --- | --- | --- | --- | --- | --- | --- | --- | --- | --- | --- | --- | --- | --- | --- | --- | --- | --- | --- | --- | --- | --- | --- | --- | --- | --- | --- | --- | --- | --- | --- | --- | --- | --- | --- | --- | --- | --- | --- | --- | --- | --- | --- | --- | --- | --- |
| T10P223019C0 |  | PT-10 ; Final Fix, Inst of Grilles & Diffusers (PAT RM-2) | 36d | 2012-07-17 | 2012-08-29 | T10P209501C0, T10P223021C0 |  |  |  |  | 58.88d | 6d | MECHANICAL [1498.8 h]; Cost |  |  | T10P223019C0 | PT | C | 10 | P2 | ME | 230 | 19 | FF | BILL 10 | B10 | S2 | FF | R00 | ACF07 | MEP | 230 |  |  |  |  |  |  |  |  |  |  |  |  |  |  |  |  |
| T10P227030C0 |  | PT-10 ; Final Fix, Inst of ELV device (Detector/Speaker) (PAT RM-2) | 42d | 2012-07-17 | 2012-09-05 | T10P209501C0, T10P227002C0 |  |  |  |  | 52.88d | 0d | ELECTRICAL [3571.2 h]; Cost |  |  | T10P227030C0 | PT | C | 10 | P2 | ME | 270 | 30 | FF | BILL 10 | B10 | S2 | FF | R00 | ACF07 | MEP | 270 |  |  |  |  |  |  |  |  |  |  |  |  |  |  |  |  |
| T10P206101C0 |  | PT-10 ; Wood / caseworks (PAT RM-2) | 54d | 2012-07-19 | 2012-09-23 | T10CO04407C0, T10P106101C0 SS+5d, T10P209501C0, T10P209601C0, T10P209901C0, TAFWA00101M0 |  |  |  |  | 24.75d | 0d | WOOD WORK/CASEWORK [659.26 no]; WOOD WORK/CASEWORK [1445 h]; Cost |  |  | T10P206101C0 | PT | C | 10 | P2 | WO | 061 | 01 |  | BILL 10 | B10 | S2 | WW | R00 | ACF06 |  | 061 | 332 | 960 |  |  |  |  |  |  |  |  |  |  |  |  |  |  |
| T10P206102C0 |  | PT-10 ; Head/Foot Wall (PAT RM-2) | 54d | 2012-07-19 | 2012-09-23 | T10CO04407C0, T10P209501C0, TAFWA00101M0, T10P206101C0 SS |  |  |  |  | 63.63d | 0d | WOOD WORK/CASEWORK [1664 h]; Cost |  |  | T10P206102C0 | PT | C | 10 | P2 | WO | 061 | 02 |  | BILL 10 | B10 | S2 | WW | R00 | ACF06 |  | 061 | 332 | 960 |  |  |  |  |  |  |  |  |  |  |  |  |  |  |
| T10P208709C0 |  | PT-10 ; Ironmongery (PAT RM-2) | 26.5d | 2012-08-14 | 2012-09-16 | T10P208107C0 |  |  |  |  | 99.63d | 55.25d | IRONMONGERY [610 h]; IRONMONGERY [61 no]; Cost |  |  | T10P208709C0 | PT | C | 10 | P2 | DO | 087 | 09 |  | BILL 10 | B10 | S2 | IM | R00 | ACF06 |  | 087 | 322 | 951 | 08 |  |  |  |  |  |  |  |  |  |  |  |  |  |
| T10P209701C0 |  | PT-10 ; Wall finishes (ST, WD, WC) (PAT RM-2) | 36d | 2012-08-14 | 2012-09-26 | T10P226011C0, T10P227020C0, T10P209501C0, T10P209305C0, T10P209601C0 |  |  |  |  | 66.13d | 0d | ASSORTED WALL FINISH [369 h]; ASSORTED WALL FINISH [423 m2]; Cost |  |  | T10P209701C0 | PT | C | 10 | P2 | WF | 097 | 01 |  | BILL 10 | B10 | S2 | 01 | R00 | ACF06 |  | 097 | 105 | 1002 |  |  |  |  |  |  |  |  |  |  |  |  |  |  |
| T10P222021C0 |  | PT-10 ; Final Fix, Terminate Sanitary Ware & Appliances (PAT RM-2) | 42d | 2012-08-23 | 2012-10-10 | T10P222011C0, T10P222025C0 |  |  |  |  | 66.13d | 21.75d | PLUMBING [3361.2 h]; Cost |  |  | T10P222021C0 | PT | C | 10 | P2 | ME | 220 | 21 | FF | BILL 10 | B10 | S2 | FF | R00 | ACF07 | MEP | 220 |  |  |  |  |  |  |  |  |  |  |  |  |  |  |  |  |
| T10P201006C0 |  | PT-10 ; 2nd, Ceiling Inspection by Consultants (PAT RM-2) | 6d | 2012-09-06 | 2012-09-12 | T10P221115C0, T10P223009C0, T10P223015C0, T10P227002C0, T10P209501C0, T10P221113C0, T10P223019C0, T10P226015C0, T10P226017C0, T10P226003C0, T10P227030C0 |  |  |  |  | 52.88d | 8.5d | Labor General [1.2 h]; Cost |  |  | T10P201006C0 | PT | C | 10 | P2 | ME | 010 | 06 | 2n | BILL 10 | B10 | S2 | CI | R00 | ACF07 | MEP | 010 |  |  |  |  |  |  |  |  |  |  |  |  |  |  |  |  |
| T10P209503C0 |  | PT-10 ; Ceiling closure - ACT/Gypsum (PAT RM-2) | 19.25d | 2012-09-23 | 2012-10-15 | T10P201006C0, T10P209510C0, T10P221115C0, T10P226005C0, T10P227001C0, T10P227002C0, TAFOA09513C1 FF, T10P206101C0, T10P223021C0, T10P226007C0 |  |  |  |  | 44.38d | 0d | ASSORTED CEILING FINISH [416.36 h]; CEILING GYPSUM [103.53 h]; ASSORTED CEILING FINISH [677 m2]; CEILING GYPSUM [316 m2]; Cost |  |  | T10P209503C0 | PT | C | 10 | P2 | CE | 095 | 03 |  | BILL 10 | B10 | S2 | 02 | R00 | ACF06 |  | 095 | 324 | 953 |  |  |  |  |  |  |  |  |  |  |  |  |  |  |
| T10P222029C0 |  | PT-10 ; Final Fix, Medical Gas pipe (PAT RM-2) | 18d | 2012-09-23 | 2012-10-14 | T10P209501C0, T10P206102C0 |  |  |  |  | 63.63d | 19.25d | PLUMBING [1149.6 h]; Cost |  |  | T10P222029C0 | PT | C | 10 | P2 | ME | 220 | 29 | FF | BILL 10 | B10 | S2 | FF | R00 | ACF07 | MEP | 220 |  |  |  |  |  |  |  |  |  |  |  |  |  |  |  |  |
| T10P211001C0 |  | PT-10 ; Wall Protection (WP, CG, WG, FCG) (PAT RM-2) | 24d | 2012-09-27 | 2012-10-24 | T10P209701C0, T10P209903C0 SS |  |  |  |  | 66.13d | 21.75d | FF&E [18 h]; Cost |  |  | T10P211001C0 | PT | C | 10 | P2 | WF | 110 | 01 |  | BILL 10 | B10 | S2 | 03 | R00 | ACF08 |  | b | 326 | 1001 |  |  |  |  |  |  |  |  |  |  |  |  |  |  |
| T10P209680C1 |  | PT-10, Carpet Tile Finish (Patient Room-2) | 0d | 2012-10-15 | 2012-10-15 | T10P209903C0 SS, T10P209907C0 SS |  |  |  |  | 67.38d | 22d | Cost |  |  |  | PT | C | 10 | P2 | FF | 096 |  |  |  | B10 |  |  | R00 | ACF06 | CPT | CPT |  |  |  |  |  |  |  |  |  |  |  |  |  |  |  |  |
| T10P209907C0 |  | PT-10 ; Ceiling Final paint (PAT RM-2) | 18d | 2012-10-15 | 2012-11-07 | T10P209601C0, T10P209905C0, T10P209503C0 |  |  |  |  | 56.38d | 0d | CEILING PAINT [15 h]; CEILING PAINT [18 m2]; Cost |  |  | T10P209907C0 | PT | C | 10 | P2 | PA | 099 | 07 |  | BILL 10 | B10 | S2 | 02 | R00 | ACF06 |  | 099 | 331 | 959 |  |  |  |  |  |  |  |  |  |  |  |  |  |  |
| T10P211003C0 |  | PT-10 ; FF & E (PAT RM-2) | 18d | 2012-10-15 | 2012-11-07 | T10P209601C0, T10P206101C0, T10P209503C0 |  |  |  |  | 56.38d | 12d | FF&E [715 h]; Cost |  |  | T10P211003C0 | PT | C | 10 | P2 | WO | 110 | 03 |  | BILL 10 | B10 | S2 | 04 | R00 | ACF08 |  | a | 333 | 961 |  |  |  |  |  |  |  |  |  |  |  |  |  |  |
| T10P222027C0 |  | PT-10 ; Final Fix, Inst of All drain (PAT RM-2) | 18d | 2012-10-15 | 2012-11-07 | T10P209305C0, T10P209503C0 |  |  |  |  | 44.38d | 0d | PLUMBING [1378.8 h]; Cost |  |  | T10P222027C0 | PT | C | 10 | P2 | ME | 220 | 27 | FF | BILL 10 | B10 | S2 | FF | R00 | ACF07 | MEP | 220 |  |  |  |  |  |  |  |  |  |  |  |  |  |  |  |  |
| T10P226019C0 |  | PT-10 ; Final Fix, Inst of Switch/Sockets (PAT RM-2) | 18d | 2012-10-15 | 2012-11-07 | T10P209901C0, T10P209503C0 |  |  |  |  | 44.38d | 0d | ELECTRICAL [362.4 h]; Cost |  |  | T10P226019C0 | PT | C | 10 | P2 | ME | 260 | 19 | FF | BILL 10 | B10 | S2 | FF | R00 | ACF07 | MEP | 260 |  |  |  |  |  |  |  |  |  |  |  |  |  |  |  |  |
|  | 10 | **Precommissioning Tesing & snagging (PAT RM-2)** |  | 2012-11-07 | 2013-01-17 |  |  |  |  |  |  |  |  |  |  |  |  |  |  |  |  |  |  |  |  |  |  |  |  |  |  |  |  |  |  |  |  |  |  |  |  |  |  |  |  |  |  |  |
| T10TS01804C0 |  | PT-10 ; MEP de-snag, FIREM sign-off | 12d | 2012-11-07 | 2012-11-22 | T10P222025C0, T10P222027C0, T10P226015C0, T10P222021C0, T10P221113C0, T10P223019C0, T10P240303C0, T10P222029C0, T10P226017C0, T10P226003C0, T10P227030C0, T10P226019C0 |  |  |  |  | 44.38d | 0d | TESTING & COMMISSIONING [510 h]; Cost |  |  | T10TS01801C0 | PT | C | 10 | TS | SC | 018 | 01 |  | BILL 10 | B10 | S2 | 01 | R00 | ACF07 |  | 018 |  |  |  |  |  |  |  |  |  |  |  |  |  |  |  |  |
| T10TS01807C0 |  | PT-10 ; Touch-up & Clean / JV inspection /CIR /De-snag | 18d | 2012-11-22 | 2012-12-15 | T10P206101C0, T10P206102C0, T10P208709C0, T10P209305C0, T10P209510C0, T10P209601C0, T10P209701C0, T10P209903C0, T10P209907C0, T10P211001C0, T10P211003C0, T10TS01804C0, T10P205501C0, T10P209503C0 |  |  |  |  | 44.38d | 21.27d | TESTING & COMMISSIONING [128 h]; Cost |  |  | T10TS01802C0 | PT | C | 10 | TS | SC | 018 | 02 |  | BILL 10 | B10 | S2 | 02 | R00 | ACF07 |  | 018 |  |  |  |  |  |  |  |  |  |  |  |  |  |  |  |  |
| T10TS01810C0 |  | PT-10 ; Consultant's final de-snag inspection | 6.88d | 2013-01-10 | 2013-01-17 | T10TS01807C0, T10TS01809C0, T09TS01809C0 |  |  |  |  | 23.1d | 0d | Labor General [1 h]; Cost |  |  | T10TS01803C0 | PT | C | 10 | TS | SC | 018 | 03 |  | BILL 10 | B10 | S2 | 03 | R00 | ACF07 |  | 018 |  |  |  |  |  |  |  |  |  |  |  |  |  |  |  |  |
|  | 04 | **Public Area ( Elev.Lobby & Corridors )** |  | 2011-06-11 | 2012-11-29 |  |  |  |  |  |  |  |  |  |  |  |  |  |  |  |  |  |  |  |  |  |  |  |  |  |  |  |  |  |  |  |  |  |  |  |  |  |  |  |  |  |  |  |
| T10PA26001C0 |  | PT-10 ; 1st Fix, Inst of Trunking/Conduiting (Public Area) | 36d | 2011-06-11 A | 2011-11-03 | T10CO07807C0, T10PA23001C0 SS | 20% | 28.8d | 2011-08-07 | 2011-09-20 | 67.28d | 0d | ELECTRICAL [1360.8 h]; Cost [37790.1 AED] | 37,790.1 | 7,558.02 | S08PA26001C0 | PT | C | 10 | PA | ME | 260 | 01 | 1S | BILL 10 | B10 | S2 | 1F | R00 | ACF04 | MEP | 260 |  |  |  | 0 | 0 | 0 | 0 | 25 | 4267.57 | 20 | M1F |  |  |  |  |  |
| T10PA23001C0 |  | PT-10 ; 1st Fix, Inst. of Supports for MEP (Public Area) | 120d | 2011-06-25 A | 2011-10-22 | T10CO07807C0 | 85% | 18d | 2011-07-10 | 2011-12-05 | 49.28d | 0d | MECHANICAL [800.4 h]; Cost [45150.4 AED] | 45,150.38 | 38,377.83 | S08PA23001C0 | PT | C | 10 | PA | ME | 230 | 01 | 1S | BILL 10 | B10 | S2 | 1F | R00 | ACF04 | MEP | 230 |  |  |  | 0 | 0 | 0 | 0 | 25 | 2618.72 | 85 | M1F | 85 | 20 |  |  |  |
| T10PA09201C0 |  | PT-10 ; Metal Studs (Public Area) | 36d | 2011-07-05 A | 2011-10-30 | T10PA23001C0 SS+12d, TAFCI09202R02 FS+58d | 80% | 7.2d | 2011-09-01 | 2011-10-12 | 33d | 0d | PARTITIONS [5687 h]; PARTITIONS - Metal Studs [789 m]; Cost |  |  | S08PA09201C0 | PT | C | 10 | PA | PT | 092 | 01 |  | BILL 10 | B10 | S2 | 1F | R00 | ACF06 | GP | 092 | 313 | 944 |  |  |  |  |  |  |  | 80 | PMS | 70 | 40 | R3 |  |  |
| T10PA21111C0 |  | PT-10 ; 1st Fix, Inst of Sprinkler main pipe (Public Area) | 36d | 2011-07-05 A | 2011-11-01 | T10PA22005C0 SS, T10PA23001C0 SS | 25% | 27d | 2011-11-05 | 2011-12-22 | 67.28d | 0d | MECHANICAL [1236 h]; Cost [46582.2 AED] | 46,582.17 | 11,645.54 | S08PA21111C0 | PT | C | 10 | PA | ME | 211 | 11 | 1S | BILL 10 | B10 | S2 | 1F | R00 | ACF04 | MEP | 211 |  |  |  |  |  |  |  |  |  |  | M1F | 25 | 20 |  |  |  |
| T10PA22019C0 |  | PT-10 ; 1st Fix, Inst of Drainage pipe (ceiling) (Public Area) | 36d | 2011-07-05 A | 2011-10-24 | T10PA23001C0 SS, T10PA26013C0 SS | 45% | 19.8d | 2011-10-11 | 2011-11-27 | 67.28d | 0d | PLUMBING [2326.8 h]; Cost [74493.8 AED] | 74,493.83 | 33,522.23 | S08PA22019C0 | PT | C | 10 | PA | ME | 220 | 19 | 1S | BILL 10 | B10 | S2 | 1F | R00 | ACF04 | MEP | 220 |  |  |  | 0 | 0 | 0 | 0 | 25 |  | 35 | M1F | 30 | 20 |  |  |  |
| T10PA26013C0 |  | PT-10 ; 1st Fix, Inst of Cable Tray (Public Area) | 36d | 2011-08-02 A | 2011-11-03 | T10CO07807C0, T10PA23001C0 SS, T10PA27010C0 SS | 20% | 28.8d | 2011-09-12 | 2011-10-24 | 67.28d | 0d | ELECTRICAL [3933.6 h]; Cost [21571.3 AED] | 21,571.27 | 4,314.25 | S08PA26013C0 | PT | C | 10 | PA | ME | 260 | 13 | 1S | BILL 10 | B10 | S2 | 1F | R00 | ACF04 | MEP | 260 |  |  |  | 0 | 0 | 0 | 0 | 25 |  | 20 | M1F | 11 | 0 |  |  |  |
| T10PA27010C0 |  | PT-10 ; 1st Fix, Inst of Trunking for ELV system (Public Area) | 36d | 2011-08-02 A | 2011-11-03 | T10CO07807C0, T10PA23001C0 SS, T10PA26001C0 SS | 20% | 28.8d | 2011-08-27 | 2011-10-10 | 67.28d | 0d | ELECTRICAL [3202.8 h]; Cost [79240.1 AED] | 79,240.08 | 15,848.02 | S08PA27010C0 | PT | C | 10 | PA | ME | 270 | 10 | 1S | BILL 10 | B10 | S2 | 1F | R00 | ACF04 | MEP | 270 |  |  |  | 0 | 0 | 0 | 0 | 15 |  | 20 | M1F | 5 | 0 |  |  |  |
| T10PA09203C0 |  | PT-10 ; Partitions early wall & 1st face (Public Area) | 36d | 2011-08-10 A | 2011-11-19 | T10PA09201C0 | 60% | 14.4d | 2011-11-20 | 2012-01-03 | 62.4d | 33.4d | PARTITIONS [789 m]; PARTITIONS [4449 h]; Cost |  |  | S08PA09203C0 | PT | C | 10 | PA | PT | 092 | 03 |  | BILL 10 | B10 | S2 | 2F | R00 | ACF06 | GP | 092 | 314 | 945 |  | 0 | 0 | 0 | 0 |  |  | 60 | P1F | 50 | 0 |  |  |  |
| T10PA22005C0 |  | PT-10 ; 1st Fix, Inst of Water supply pipe (ceiling) (Public Area) | 36d | 2011-08-10 A | 2011-10-27 | T10PA22019C0 SS, T10PA23001C0 SS | 35% | 23.4d | 2011-09-28 | 2011-11-13 | 67.28d | 0d | PLUMBING [4548 h]; Cost [245665 AED] | 245,664.7 | 85,982.65 | S08PA22005C0 | PT | C | 10 | PA | ME | 220 | 05 | 1S | BILL 10 | B10 | S2 | 1F | R00 | ACF04 | MEP | 220 |  |  |  | 0 | 0 | 0 | 0 | 10 |  |  | M1F | 20 | 0 |  |  |  |
| T10PA23023C0 |  | PT-10 ; 1st Fix, Inst of Main Ducting (Public Area) | 36d | 2011-08-10 A | 2011-11-27 | T10PA23001C0 SS, T10PA23017C0 SS | 25% | 27d | 2011-10-26 | 2011-12-13 | 56.4d | 0d | MECHANICAL [8022 h]; Cost [438125 AED] | 438,124.55 | 109,531.14 | S08PA23023C0 | PT | C | 10 | PA | ME | 230 | 23 | 1S | BILL 10 | B10 | S2 | 1F | R00 | ACF04 | MEP | 230 |  |  |  |  |  |  |  |  |  |  | M1F | 25 | 0 |  |  |  |
| T10PA22011C0 |  | PT-10 ; 2nd Fix, Drainage/Water pipe (wall) (Public Area) | 42d | 2011-09-05 A | 2011-12-18 | T10PA09201C0 | 10% | 37.8d | 2011-10-18 | 2011-12-11 | 33d | 0d | PLUMBING [1378.8 h]; Cost [74493.8 AED] | 74,493.83 | 7,449.38 | S08PA22011C0 | PT | C | 10 | PA | ME | 220 | 11 | 2n | BILL 10 | B10 | S2 | 2F | R00 | ACF07 | MEP | 220 |  |  |  |  |  |  |  |  |  |  |  |  |  |  |  |  |
| T10PA26009C0 |  | PT-10 ; 2nd Fix, Inst of Wall conduites (Public Area) | 42d | 2011-09-05 A | 2011-12-18 | T10PA09201C0 | 10% | 37.8d | 2011-10-18 | 2011-12-11 | 33d | 0d | ELECTRICAL [734.4 h]; Cost [37790.1 AED] | 37,790.1 | 3,779.01 | S08PA26009C0 | PT | C | 10 | PA | ME | 260 | 09 | 2n | BILL 10 | B10 | S2 | 2F | R00 | ACF07 | MEP | 260 |  |  |  |  |  |  |  | 25 | 4438.43 |  |  |  |  |  |  |  |
| T10PA23017C0 |  | PT-10 ; 1st Fix, Inst of CHW pipe (Public Area) | 54d | 2011-10-22 | 2011-12-29 | T10PA21111C0 SS+12d, T10PA23001C0 |  |  |  |  | 49.28d | 0d | MECHANICAL [2467.2 h]; Cost |  |  | S08PA23017C0 | PT | C | 10 | PA | ME | 230 | 17 | 1S | BILL 10 | B10 | S2 | 1F | R00 | ACF04 | MEP | 230 |  |  |  |  |  |  |  |  |  |  | M1F |  |  |  |  |  |
| T10PA21117C0 |  | PT-10 ; 1st Fix, Inst of Sprinkler branch pipe (Public Area) | 48d | 2011-11-01 | 2012-01-03 | T10PA09201C0, T10PA21111C0 |  |  |  |  | 136.28d | 87d | MECHANICAL [561.6 h]; Cost |  |  | S08PA21117C0 | PT | C | 10 | PA | ME | 211 | 17 | 1S | BILL 10 | B10 | S2 | 1F | R00 | ACF04 | MEP | 211 |  |  |  |  |  |  |  |  |  |  | M1F |  |  |  |  |  |
| T10PA27001C0 |  | PT-10 ; 1st Fix, Wiring/ Cabling work (Public Area) | 48d | 2011-11-03 | 2012-01-05 | T10PA26001C0, T10PA26013C0, T10PA27010C0 |  |  |  |  | 134.48d | 85.2d | ELECTRICAL [392.4 h]; Cost |  |  | S08PA27001C0 | PT | C | 10 | PA | ME | 270 | 01 | 1S | BILL 10 | B10 | S2 | 1F | R00 | ACF04 | MEP | 270 |  |  |  |  |  |  |  |  |  |  | M1F |  |  |  |  |  |
| T10PA23008C0 |  | PT-10 ; 1st Fix, Inst of VCD's/FD's (Public Area) | 48d | 2011-11-27 | 2012-01-24 | T10PA23023C0 |  |  |  |  | 118.28d | 69d | MECHANICAL [1753.2 h]; Cost |  |  | S08PA23008C0 | PT | C | 10 | PA | ME | 230 | 08 | 1S | BILL 10 | B10 | S2 | 1F | R00 | ACF04 | MEP | 230 |  |  |  |  |  |  |  |  |  |  | M1F |  |  |  |  |  |
| T10PA01005C0 |  | PT-10 ; 2nd, Wall Inspection by Consultant (Public Area) | 6d | 2011-12-19 | 2011-12-25 | T10PA22011C0, T10PA26009C0 |  |  |  |  | 33d | 4d | Labor General [1.2 h]; Cost |  |  | S08PA01005C0 | PT | C | 10 | PA | ME | 010 | 05 | 2n | BILL 10 | B10 | S2 | WI | R00 | ACF07 | MEP | 010 |  |  |  |  |  |  |  |  |  |  |  |  |  |  |  |  |
| T10PA08103C0 |  | PT-10 ; Door Frames (Public Area) | 36d | 2011-12-28 | 2012-02-09 | T10PA09201C0, GNHE08101C0 FS+126d |  |  |  |  | 31d | 2d | ASSORTED DOORS [448 h]; Cost |  |  | S08PA08103C0 | PT | C | 10 | PA | DO | 081 | 03 |  | BILL 10 | B10 | S2 | DF | R00 | ACF06 |  | 081 | 316 | 947 | 08 |  |  |  |  |  |  |  |  |  |  |  |  |  |
| T10PA23009C0 |  | PT-10 ; 2nd Fix, Inst of VAV'S CHW connection (Public Area) | 42d | 2011-12-29 | 2012-02-19 | T10PA23017C0 |  |  |  |  | 49.28d | 0d | MECHANICAL [1450.8 h]; Cost |  |  | S08PA23009C0 | PT | C | 10 | PA | ME | 230 | 09 | 2n | BILL 10 | B10 | S2 | 2F | R00 | ACF07 | MEP | 230 |  |  |  |  |  |  |  |  |  |  |  |  |  |  |  |  |
| T10PA09205C0 |  | PT-10 ; Partitions Closing (Public Area) | 36d | 2011-12-31 | 2012-02-12 | T10PA01005C0, T10PA09203C0, T10PA22005C0, T10PA22019C0, TAFOA09214C1 FF, TAFCI22011R02 FS+58d, T10PA08103C0 FF, T10PA23023C0 |  |  |  |  | 29d | 0d | PARTITIONS [789 m]; PARTITIONS [5697 h]; Cost |  |  | S08PA09205C0 | PT | C | 10 | PA | PT | 092 | 05 |  | BILL 10 | B10 | S2 | FF | R00 | ACF06 | GP | 092 | 315 | 946 |  |  |  |  |  |  |  |  | P2F |  |  | R3 |  |  |
| T10PA09901C0 |  | PT-10 ; Wall Prime & 1st coat (Public Area) | 30d | 2012-02-13 | 2012-03-18 | T10PA09205C0 |  |  |  |  | 72.88d | 0d | WALL PAINT [866 h]; WALL PAINT [1080 m2]; Cost |  |  | S08PA09901C0 | PT | C | 10 | PA | PA | 099 | 01 |  | BILL 10 | B10 | S2 | 01 | R00 | ACF06 |  | 099 | 328 | 956 |  |  |  |  |  |  |  |  |  |  |  |  |  |  |
| T10PA26005C0 |  | PT-10 ; 2nd Fix, Wiring for Power/Lighting/Emergency (Public Area) | 42d | 2012-02-13 | 2012-04-01 | T10PA09205C0 |  |  |  |  | 132.88d | 0d | ELECTRICAL [392.4 h]; Cost |  |  | S08PA26005C0 | PT | C | 10 | PA | ME | 260 | 05 | 2n | BILL 10 | B10 | S2 | 2F | R00 | ACF07 | MEP | 260 |  |  |  |  |  |  |  |  |  |  |  |  |  |  |  |  |
| T10PA26007C0 |  | PT-10 ; 2nd Fix, Cable Pulling (Public Area) | 48d | 2012-02-13 | 2012-04-08 | T10PA09201C0 SS+6d, T10PA09205C0 |  |  |  |  | 168.88d | 119.6d | ELECTRICAL [2683.2 h]; Cost |  |  | S08PA26007C0 | PT | C | 10 | PA | ME | 260 | 07 | 2n | BILL 10 | B10 | S2 | 2F | R00 | ACF07 | MEP | 260 |  |  |  |  |  |  |  |  |  |  |  |  |  |  |  |  |
| T10PA26011C0 |  | PT-10 ; 2nd Fix, Inst of Equipment (DB) (Public Area) | 54d | 2012-02-13 | 2012-04-15 | T10PA09205C0 |  |  |  |  | 158.88d | 89.6d | ELECTRICAL [878.4 h]; Cost |  |  | S08PA26011C0 | PT | C | 10 | PA | ME | 260 | 11 | 2n | BILL 10 | B10 | S2 | 2F | R00 | ACF04 | MEP | 260 |  |  |  |  |  |  |  |  |  |  |  |  |  |  | E |  |
| T10PA26053C0 |  | PT-10 ; 2nd Fix, Wiring / Cabling (Public Area) | 42d | 2012-02-13 | 2012-04-01 | T10PA09203C0, T10PA09205C0 |  |  |  |  | 84.88d | 35.6d | ELECTRICAL [392.4 h]; Cost |  |  | S08PA26053C0 | PT | C | 10 | PA | ME | 260 | 53 | 2n | BILL 10 | B10 | S2 | 2F | R00 | ACF07 | MEP | 260 | 389 | 977 |  |  |  |  |  |  |  |  |  |  |  |  |  |  |
| T10PA23015C0 |  | PT-10 ; 2nd Fix, Insulation of CHW pipe & Duct (Public Area) | 48d | 2012-02-19 | 2012-04-15 | T10PA23009C0, T10PA23017C0, T10PA23023C0 |  |  |  |  | 49.28d | 0d | MECHANICAL [3064.8 h]; Cost |  |  | S08PA23015C0 | PT | C | 10 | PA | ME | 230 | 15 | 2n | BILL 10 | B10 | S2 | 2F | R00 | ACF07 | MEP | 230 |  |  |  |  |  |  |  |  |  |  |  |  |  |  |  |  |
| T10PA05501C0 |  | PT-10 ; Handrails & balustrade (Public Area) | 36d | 2012-03-19 | 2012-04-29 | T10PA09901C0, TAFT105509C0, TAFT805509C0 |  |  |  |  | 134.88d | 41.6d | SECONDARY STEEL [356 h]; Cost |  |  | S08PA05501C0 | PT | C | 10 | PA | SW | 055 | 01 |  | BILL 10 | B10 | S2 | 01 | R00 | ACF03 |  | a |  |  |  |  |  |  |  |  |  |  |  |  |  |  |  |  |
| T10PA26015C0 |  | PT-10 ; Final Fix, Termination & Gladding of Cables (Public Area) | 36d | 2012-04-02 | 2012-05-13 | T10PA26005C0 |  |  |  |  | 132.88d | 83.6d | ELECTRICAL [148.8 h]; Cost |  |  | S08PA26015C0 | PT | C | 10 | PA | ME | 260 | 15 | FF | BILL 10 | B10 | S2 | FF | R00 | ACF07 | MEP | 260 |  |  |  |  |  |  |  |  |  |  |  |  |  |  |  |  |
| T10PA09501C0 |  | PT-10 ; Ceiling Grid and Service Tile (Public Area) | 24d | 2012-04-15 | 2012-05-13 | T10PA09205C0 SS+15d, T10PA21117C0, T10PA23008C0, T10PA23009C0, T10PA23015C0, T10PA27001C0, TAFCI22022R02 FS+58d, T10PA26053C0 FF, T10PA09901C0 |  |  |  |  | 49.28d | 0d | CEILING GRID FOR GYPSUM [7543.63 h]; CEILING GRID FOR GYPSUM [645.55 m2]; Cost |  |  | S08PA09501C0 | PT | C | 10 | PA | CE | 095 | 01 |  | BILL 10 | B10 | S2 | 01 | R00 | ACF06 |  | 095 | 323 | 952 |  |  |  |  |  |  |  |  |  |  |  |  |  | R3 |
| T10PA09601C0 |  | PT-10 ; Flooring (Rubber & etc) (Public Area) | 30d | 2012-05-13 | 2012-06-18 | TAFCI22022R02 FS+58d, T10PA09501C0 |  |  |  |  | 93.28d | 0d | RUBBER FLOOR [48 h]; RUBBER FLOOR [114 m2]; Cost |  |  | S08PA09601C0 | PT | C | 10 | PA | FF | 096 | 01 |  | BILL 10 | B10 | S2 | 03 | R00 | ACF06 |  | RF | 326 | 955 |  |  |  |  |  |  |  |  |  |  |  |  |  | R3 |
| T10PA09602C0 |  | PT-10 ; Flooring (Stone) (Public Area) | 30d | 2012-05-13 | 2012-06-18 | TAFCI22022R02 FS+58d, T10PA09501C0, T10PA05501C0 FF |  |  |  |  | 93.28d | 0d | STONE FLOOR [27 m2]; STONE FLOOR [24 h]; Cost |  |  | S08PA09601C0 | PT | C | 10 | PA | FF | 096 | 01 |  | BILL 10 | B10 | S2 | 09 | R00 | ACF06 |  | ST | 326 | 955 |  |  |  |  |  |  |  |  |  |  |  |  |  | R3 |
| T10PA09905C0 |  | PT-10 ; Ceiling Prime & 1st coat (Public Area) | 30d | 2012-05-13 | 2012-06-18 | T10PA09501C0 |  |  |  |  | 135.28d | 0d | CEILING PAINT [55 h]; CEILING PAINT [67 m2]; Cost |  |  | S08PA09905C0 | PT | C | 10 | PA | PA | 099 | 05 |  | BILL 10 | B10 | S2 | 01 | R00 | ACF06 |  | 099 | 330 | 958 |  |  |  |  |  |  |  |  |  |  |  |  |  |  |
| T10PA21115C0 |  | PT-10 ; 2nd Fix, Inst of Sprinkler droppers (Public Area) | 42d | 2012-05-13 | 2012-07-02 | T10PA09501C0 |  |  |  |  | 55.28d | 0d | MECHANICAL [1602 h]; Cost |  |  | S08PA21115C0 | PT | C | 10 | PA | ME | 211 | 15 | 2n | BILL 10 | B10 | S2 | 2F | R00 | ACF07 | MEP | 211 |  |  |  |  |  |  |  |  |  |  |  |  |  |  |  |  |
| T10PA23021C0 |  | PT-10 ; 2nd Fix, Inst of Flexible Duct & Plenum boxes (Public Area) | 42d | 2012-05-13 | 2012-07-02 | T10PA09205C0, T10PA09501C0 |  |  |  |  | 55.28d | 0d | MECHANICAL [30 h]; Cost |  |  | S08PA23021C0 | PT | C | 10 | PA | ME | 230 | 21 | 2n | BILL 10 | B10 | S2 | 2F | R00 | ACF07 | MEP | 230 |  |  |  |  |  |  |  |  |  |  |  |  |  |  |  |  |
| T10PA26017C0 |  | PT-10 ; Final Fix, Inst of Ceiling rose (Public Area) | 36d | 2012-05-13 | 2012-06-25 | T10PA09501C0 |  |  |  |  | 49.28d | 0d | ELECTRICAL [61.2 h]; Cost |  |  | S08PA26017C0 | PT | C | 10 | PA | ME | 260 | 17 | FF | BILL 10 | B10 | S2 | FF | R00 | ACF07 | MEP | 260 |  |  |  |  |  |  |  |  |  |  |  |  |  |  |  |  |
| T10PA27002C0 |  | PT-10 ; 2nd Fix, Wiring Droppers (Public Area) | 42d | 2012-05-13 | 2012-07-02 | T10PA09501C0 |  |  |  |  | 49.28d | 0d | ELECTRICAL [392.4 h]; Cost |  |  | S08PA27002C0 | PT | C | 10 | PA | ME | 270 | 02 | 2n | BILL 10 | B10 | S2 | 2F | R00 | ACF07 | MEP | 270 |  |  |  |  |  |  |  |  |  |  |  |  |  |  |  |  |
| T10PA27020C0 |  | PT-10 ; 2nd Fix, Inst of ELV Equipment (Panels) (Public Area) | 66d | 2012-05-13 | 2012-07-30 | T10PA09205C0, T10PA09501C0 |  |  |  |  | 69.28d | 0d | ELECTRICAL [1819.2 h]; Cost |  |  | S08PA27020C0 | PT | C | 10 | PA | ME | 270 | 20 | 2n | BILL 10 | B10 | S2 | 2F | R00 | ACF04 | MEP | 270 |  |  |  |  |  |  |  |  |  |  |  |  |  |  | E |  |
| T10PA08107C0 |  | PT-10 ; Doors (Public Area) | 36d | 2012-06-18 | 2012-07-30 | T10PA08103C0, T10PA09501C0, T10PA09601C0, T10PA09901C0, T10PA09602C0 |  |  |  |  | 93.28d | 0d | ASSORTED DOORS [900 h]; ASSORTED DOORS [90 no]; Cost |  |  | S08PA08107C0 | PT | C | 10 | PA | DO | 081 | 07 |  | BILL 10 | B10 | S2 | DR | R00 | ACF06 |  | 081 | 317 | 948 | 08 |  |  |  |  |  |  |  |  |  |  |  |  |  |
| T10PA09903C0 |  | PT-10 ; Wall Final Paint (Public Area) | 30d | 2012-06-18 | 2012-07-23 | T10PA09901C0, T10PA09905C0, T10PA09501C0 |  |  |  |  | 135.28d | 72d | WALL PAINT [467 h]; WALL PAINT [581 m2]; Cost |  |  | S08PA09903C0 | PT | C | 10 | PA | PA | 099 | 03 |  | BILL 10 | B10 | S2 | 02 | R00 | ACF06 |  | 099 | 329 | 957 |  |  |  |  |  |  |  |  |  |  |  |  |  |  |
| T10PA26003C0 |  | PT-10 ; Final Fix, Inst of Light fittings (Public Area) | 48d | 2012-06-25 | 2012-08-22 | T10PA09501C0, T10PA26017C0 |  |  |  |  | 49.28d | 0d | ELECTRICAL [7815.6 h]; Cost |  |  | S08PA26003C0 | PT | C | 10 | PA | ME | 260 | 03 | FF | BILL 10 | B10 | S2 | FF | R00 | ACF07 | MEP | 260 |  |  |  |  |  |  |  |  |  |  |  |  |  |  |  |  |
| T10PA21113C0 |  | PT-10 ; Final Fix, Inst of Sprinklers head/ Extinguisher (Public Area) | 36d | 2012-07-02 | 2012-08-13 | T10PA09501C0, T10PA21115C0 |  |  |  |  | 55.28d | 6d | MECHANICAL [234 h]; Cost |  |  | S08PA21113C0 | PT | C | 10 | PA | ME | 211 | 13 | FF | BILL 10 | B10 | S2 | FF | R00 | ACF07 | MEP | 211 |  |  |  |  |  |  |  |  |  |  |  |  |  |  |  |  |
| T10PA23019C0 |  | PT-10 ; Final Fix, Inst of Grilles & Diffusers (Public Area) | 36d | 2012-07-02 | 2012-08-13 | T10PA09501C0, T10PA23021C0 |  |  |  |  | 55.28d | 6d | MECHANICAL [1498.8 h]; Cost |  |  | S08PA23019C0 | PT | C | 10 | PA | ME | 230 | 19 | FF | BILL 10 | B10 | S2 | FF | R00 | ACF07 | MEP | 230 |  |  |  |  |  |  |  |  |  |  |  |  |  |  |  |  |
| T10PA27030C0 |  | PT-10 ; Final Fix, Inst of ELV devise (Detector/Speaker) (Public Area) | 42d | 2012-07-02 | 2012-08-22 | T10PA09501C0, T10PA27002C0 |  |  |  |  | 49.28d | 0d | ELECTRICAL [3571.2 h]; Cost |  |  | S08PA27030C0 | PT | C | 10 | PA | ME | 270 | 30 | FF | BILL 10 | B10 | S2 | FF | R00 | ACF07 | MEP | 270 |  |  |  |  |  |  |  |  |  |  |  |  |  |  |  |  |
| T10PA08709C0 |  | PT-10 ; Ironmongery (Public Area) | 36d | 2012-07-30 | 2012-09-12 | T10PA08107C0 |  |  |  |  | 93.28d | 44d | IRONMONGERY [1280 h]; IRONMONGERY [128 no]; Cost |  |  | S08PA08709C0 | PT | C | 10 | PA | DO | 087 | 09 |  | BILL 10 | B10 | S2 | IM | R00 | ACF06 |  | 087 | 322 | 951 | 08 |  |  |  |  |  |  |  |  |  |  |  |  |  |
| T10PA09701C0 |  | PT-10 ; Wall finishes (ST, WD, WC) (Public Area) | 36d | 2012-07-30 | 2012-09-12 | T10PA26011C0, T10PA27020C0, TVT0114211C0, TVT0214211C0, TVT0714211C0, TVT3114211C0, TVT3214255C0, TVT3314245C0, TAFCI22022R02 FS+158d, T10PA09501C0, T10PA09601C0, T10PA09602C0 |  |  |  |  | 69.28d | 0d | ASSORTED WALL FINISH [764 h]; ASSORTED WALL FINISH [878 m2]; Cost |  |  | S08PA09701C0 | PT | C | 10 | PA | WF | 097 | 01 |  | BILL 10 | B10 | S2 | 01 | R00 | ACF06 |  | 097 | 105 | 1002 |  |  |  |  |  |  |  |  |  |  |  |  |  |  |
| T10PA09702C0 |  | PT-10 ; Ceramic Wall Tiles (Public Area) | 7d | 2012-07-30 | 2012-08-07 | T10PA26011C0, T10PA27020C0, TVT0114211C0, TVT0214211C0, TVT0714211C0, TVT3114211C0, TVT3214255C0, TVT3314245C0, T10PA09501C0 |  |  |  |  | 122.28d | 73d | ASSORTED WALL FINISH [1049 h]; ASSORTED WALL FINISH [201 m2]; Cost |  |  | S08PA09701C0 | PT | C | 10 | PA | WF | 097 | 01 |  | BILL 10 | B10 | S2 | 04 | R00 | ACF06 |  | 097 | 105 | 1002 |  |  |  |  |  |  |  |  |  |  |  |  |  |  |
| T10PA01006C0 |  | PT-10 ; 2nd, Ceiling Inspection by Consultants (Public Area) | 6d | 2012-08-22 | 2012-08-29 | T10PA21115C0, T10PA23009C0, T10PA23015C0, T10PA27002C0, T10PA09501C0, T10PA21113C0, T10PA23019C0, T10PA26015C0, T10PA26017C0, T10PA26003C0, T10PA27030C0 |  |  |  |  | 49.28d | 0d | Labor General [1.2 h]; Cost |  |  | S08PA01006C0 | PT | C | 10 | PA | ME | 010 | 06 | 2n | BILL 10 | B10 | S2 | CI | R00 | ACF07 | MEP | 010 |  |  |  |  |  |  |  |  |  |  |  |  |  |  |  |  |
| T10PA09503C0 |  | PT-10 ; Ceiling closure - ACT/Gypsum (Public Area) | 26d | 2012-08-29 | 2012-09-29 | T10PA01006C0, T10PA21115C0, T10PA26005C0, T10PA27001C0, T10PA27002C0, TAFOA09513C1 FF, T10PA23021C0, T10PA26007C0 |  |  |  |  | 49.28d | 0d | ASSORTED CEILING FINISH [851.77 h]; CEILING GYPSUM [211.76 h]; ASSORTED CEILING FINISH [1385 m2]; CEILING GYPSUM [646 m2]; Cost |  |  | S08PA09503C0 | PT | C | 10 | PA | CE | 095 | 03 |  | BILL 10 | B10 | S2 | 02 | R00 | ACF06 |  | 095 | 324 | 953 |  |  |  |  |  |  |  |  |  |  |  |  |  | R3 |
| T10PA11001C0 |  | PT-10 ; Wall Protection (WP, CG, WG, FCG) (Public Area) | 24d | 2012-09-12 | 2012-10-10 | T10PA09701C0, T10PA09903C0 SS |  |  |  |  | 69.28d | 20d | FF&E [42 h]; Cost |  |  | S08PA11001C0 | PT | C | 10 | PA | WF | 110 | 01 |  | BILL 10 | B10 | S2 | 03 | R00 | ACF08 |  | b | 326 | 1001 |  |  |  |  |  |  |  |  |  |  |  |  |  |  |

| ID | WBS | Activity | Duration | Start | Finish | Predecessors | Complete | Remaining | Planned start | Planned finish | Total float | Free float | Resources | Cost | Actual cost | Change Order # | NEW ACTIVITY ID | change id | CCAD BUILDING(SET) | CCAD PHASE(SET) | CCAD DIVISION(SET) | CCAD FLOOR(SET) | CCAD ZONE(SET) | CCAD WORK(SET) | CCAD SECTION(SET) | CCAD SERIAL No.(SET) | CCAD CBS(SET) | CCAD BILL(SET) | CCAD HANDOVER(SET) | CCAD TAG(SET) | CCAD REV(SET) | CCADACF (SET) | CCAD SSCF | CCAD SUB ZONE MEP(SET) | CCAD CSA | U% | Act Selector % | CCAD MEQ | IDDD |
| --- | --- | --- | --- | --- | --- | --- | --- | --- | --- | --- | --- | --- | --- | --- | --- | --- | --- | --- | --- | --- | --- | --- | --- | --- | --- | --- | --- | --- | --- | --- | --- | --- | --- | --- | --- | --- | --- | --- | --- |
| T10PA11009C0 |  | PT-10 ; Signage (Public Area) | 13.5d | 2012-09-12 | 2012-09-29 | T10PA09701C0 |  |  |  |  | 79.78d | 30.5d | SIGNAGES [173 h]; SIGNAGES [172.58 no]; Cost |  |  | 322 | 951 | S08PA11009C0 | PT | C | 08 | 10 | PA | SA | 110 | 09 | BILL 10 | B10 | S2 | 09 | R00 | ACF08 | c |  |  |  |  |  |  |
| T10PA09907C0 |  | PT-10 ; Ceiling Final paint (Public Area) | 18d | 2012-09-29 | 2012-10-20 | T10PA09601C0, T10PA09905C0, T10PA09602C0, T10PA09503C0 |  |  |  |  | 61.28d | 12d | CEILING PAINT [29 h]; CEILING PAINT [36 m2]; Cost |  |  | 331 | 959 | S08PA09907C0 | PT | C |  | 10 | PA | PA | 099 | 07 | BILL 10 | B10 | S2 | 02 | R00 | ACF06 | 099 |  |  |  |  |  |  |
| T10PA26019C0 |  | PT-10 ; Final Fix, Inst of Switch/Sockets (Public Area) | 18d | 2012-09-29 | 2012-10-20 | T10PA09901C0, T10PA09503C0 |  |  |  |  | 49.28d | 0d | ELECTRICAL [362.4 h]; Cost |  |  |  |  | S08PA26019C0 | PT | C |  | 10 | PA | ME | 260 | 19 | BILL 10 | B10 | S2 | FF | R00 | ACF07 | 260 | FF | MEP |  |  |  |  |
|  | 10 | **Precommissioning Tesing & snagging (Public Area)** |  | 2012-10-20 | 2012-11-29 |  |  |  |  |  |  |  |  |  |  |  |  |  |  |  |  |  |  |  |  |  |  |  |  |  |  |  |  |  |  |  |  |  |  |
| T10TS01805C0 |  | PT-10 ; MEP de-snag, FIREM sign-off | 12d | 2012-10-20 | 2012-11-05 | T10PA26015C0, T10PA21113C0, T10PA23019C0, T10PA26017C0, T10PA26003C0, T10PA27030C0, T10PA26019C0 |  |  |  |  | 49.28d | 0d | TESTING & COMMISSIONING [510 h]; Cost |  |  |  |  | T10TS01801C0 | PT | C |  | 10 | TS | SC | 018 | 01 | BILL 10 | B10 | S2 | 01 | R00 | ACF07 | 018 |  |  |  |  |  |  |
| T10TS01808C0 |  | PT-10 ; Touch-up & Clean / JV inspection /CIR /De-snag | 13.5d | 2012-11-05 | 2012-11-22 | T10PA08709C0, T10PA09601C0, T10PA09701C0, T10PA09903C0, T10PA09907C0, T10PA11001C0, T10PA11009C0, T10TS01805C0, T10PA05501C0, T10PA09602C0, T10PA09702C0, T10PA09503C0 |  |  |  |  | 49.28d | 0d | TESTING & COMMISSIONING [128 h]; Cost |  |  |  |  | T10TS01802C0 | PT | C |  | 10 | TS | SC | 018 | 02 | BILL 10 | B10 | S2 | 02 | R00 | ACF07 | 018 |  |  |  |  |  |  |
| T10TS01811C0 |  | PT-10 ; Consultant's final de-snag inspection | 6.75d | 2012-11-22 | 2012-11-29 | T10TS01808C0 |  |  |  |  | 49.28d | 3.9d | Labor General [1 h]; Cost |  |  |  |  | T10TS01803C0 | PT | C |  | 10 | TS | SC | 018 | 03 | BILL 10 | B10 | S2 | 03 | R00 | ACF07 | 018 |  |  |  |  |  |  |
|  | 05 | **TR Room** |  | 2011-07-05 | 2012-09-01 |  |  |  |  |  |  |  |  |  |  |  |  |  |  |  |  |  |  |  |  |  |  |  |  |  |  |  |  |  |  |  |  |  |  |
| T10TR09201C0 |  | PT-10 ; Metal Studs (TR RM) | 6d | 2011-07-05 A | 2011-10-23 | T10PA09201C0 SS | 80% | 1.2d | 2011-09-15 | 2011-09-21 | 46.8d | 0d | PARTITIONS [231 h]; PARTITIONS - Metal Studs [32 m]; Cost |  |  | 313 | 885 | T10TR09201C0 | PT | C |  | 10 | TR | PT | 092 | 01 | BILL 10 | B10 | S2 | 1F | R00 | ACF06 | 092 |  | GP | 80 | PMS |  |  |
| T10TR09203C0 |  | PT-10 ; Partitions 1st face (TR RM) | 24d | 2011-09-05 A | 2011-11-09 | T10TR09201C0 | 50% | 12d | 2011-10-18 | 2011-11-17 | 70.8d | 41.8d | PARTITIONS [32 m]; PARTITIONS [177 h]; Cost |  |  | 314 | 886 | T10TR09203C0 | PT | C |  | 10 | TR | PT | 092 | 03 | BILL 10 | B10 | S2 | 2F | R00 | ACF06 | 092 |  | GP | 50 | P1F |  |  |
| T10TR26026C0 |  | PT-10 ; 2nd Fix, Conduit (TR RM) | 30d | 2011-09-05 A | 2011-11-23 | T10TR09201C0 | 20% | 24d | 2011-10-22 | 2011-11-30 | 46.8d | 0d | ELECTRICAL [734.4 h]; Cost [37790.1 AED] | 37,790.1 | 7,558.02 |  |  | T10TR26026C0 | PT | C |  | 10 | TR | ME | 260 | 26 | BILL 10 | B10 | S2 | 2F | R00 | ACF07 | 260 | 2n | MEP |  |  |  |  |
| T10TR01005C0 |  | PT-10 ; 2nd, Wall Inspection by Consultant (TR RM) | 12d | 2011-11-23 | 2011-12-10 | T10TR26026C0 |  |  |  |  | 46.8d | 17.8d | Labor General [1.2 h]; Cost |  |  |  |  | T10TR01005C0 | PT | C |  | 10 | TR | ME | 010 | 05 | BILL 10 | B10 | S2 | WI | R00 | ACF07 | 010 | 2n | MEP |  |  |  |  |
| T10TR08101C0 |  | PT-10 ; Door Frames (TR RM) | 18d | 2011-12-28 | 2012-01-18 | T10TR09201C0, GNHE08101C0 FS+126d |  |  |  |  | 43d | 14d | ASSORTED DOORS [19 h]; Cost |  |  | 316 | 20001090 | T10TR08101C0 | PT | C | 08 | 10 | TR | DO | 081 | 01 | BILL 10 | B10 | S2 | DF | R00 | ACF06 | 081 |  |  |  |  |  |  |
| T10TR09205C0 |  | PT-10 ; Partitions Closing (TR RM) | 30d | 2011-12-31 | 2012-02-05 | T10TR01005C0, T10TR09201C0, T10TR09203C0, TAFOA09214C1 FF, T10TR08101C0 FF, T10PA09205C0 SS |  |  |  |  | 29d | 0d | PARTITIONS [32 m]; PARTITIONS [235 h]; Cost |  |  | 315 | 887 | T10TR09205C0 | PT | C |  | 10 | TR | PT | 092 | 05 | BILL 10 | B10 | S2 | FF | R00 | ACF06 | 092 |  | GP |  | P2F |  |  |
| T10TR09601C0 |  | PT-10 ; Floor Finishes (TR RM) | 18d | 2012-02-06 | 2012-02-26 | T10TR09205C0 |  |  |  |  | 71d | 0d | ASSORTED FLOOR FINISH [1248 h]; ASSORTED FLOOR FINISH [693 m2]; Cost |  |  | 359 | 20001120 | T10TR09601C0 | PT | C |  | 10 | TR | FF | 096 | 01 | BILL 10 | B10 | S2 | 01 | R00 | ACF06 | FF |  |  |  |  |  |  |
| T10TR09901C0 |  | PT-10 ; Wall Prime & 1st coat (TR RM) | 18d | 2012-02-06 | 2012-02-26 | T10TR09205C0 |  |  |  |  | 29d | 0d | WALL PAINT [37 h]; WALL PAINT [45 m2]; Cost |  |  | 360 | 20001110 | T10TR09901C0 | PT | C |  | 10 | TR | PA | 099 | 01 | BILL 10 | B10 | S2 | 01 | R00 | ACF06 | 099 |  |  |  |  |  |  |
| T10TR23009C0 |  | PT-10 ; 2nd Fix, Inst of VAV'S CHW connection (TR RM) | 36d | 2012-02-06 | 2012-03-18 | T10TR09205C0 |  |  |  |  | 29d | 0d | MECHANICAL [1450.8 h]; Cost |  |  |  |  | T10TR23009C0 | PT | C |  | 10 | TR | ME | 230 | 09 | BILL 10 | B10 | S2 | 2F | R00 | ACF07 | 230 | 2n | MEP |  |  |  |  |
| T10TR23011C0 |  | PT-10 ; 2nd Fix, Inst of VCD's/FD's (TR RM) | 36d | 2012-02-06 | 2012-03-18 | T10TR09205C0 |  |  |  |  | 29d | 0d | MECHANICAL [1753.2 h]; Cost |  |  |  |  | T10TR23011C0 | PT | C |  | 10 | TR | ME | 230 | 11 | BILL 10 | B10 | S2 | 2F | R00 | ACF07 | 230 | 2n | MEP |  |  |  |  |
| T10TR26007C0 |  | PT-10 ; 2nd Fix, Cable Pulling (TR RM) | 36d | 2012-02-06 | 2012-03-18 | T10TR09203C0, T10TR09205C0 |  |  |  |  | 77d | 48d | ELECTRICAL [2683.2 h]; Cost |  |  |  |  | T10TR26007C0 | PT | C |  | 10 | TR | ME | 260 | 07 | BILL 10 | B10 | S2 | 2F | R00 | ACF07 | 260 | 2n | MEP |  |  |  |  |
| T10TR26009C0 |  | PT-10 ; 2nd Fix, Inst of Equipment (DB, TR, SG,BUS) (TR RM) | 54d | 2012-02-06 | 2012-04-08 | T10TR09205C0 |  |  |  |  | 41d | 0d | ELECTRICAL [3943.2 h]; Cost |  |  |  |  | T10TR26009C0 | PT | C |  | 10 | TR | ME | 260 | 09 | BILL 10 | B10 | S2 | 2F | R00 | ACF04 | 260 | 2n | MEP |  |  | E |  |
| T10TR26027C0 |  | PT-10 ; 2nd Fix, Wiring / Cabling (TR RM) | 30d | 2012-02-06 | 2012-03-11 | T10TR09203C0, T10TR09205C0 |  |  |  |  | 95d | 66d | ELECTRICAL [392.4 h]; Cost |  |  | 417 | 1318 | T10TR26027C0 | PT | C |  | 10 | TR | ME | 260 | 27 | BILL 10 | B10 | S2 | 2F | R00 | ACF07 | 260 | 2n | MEP |  |  |  |  |
| T10TR09501C0 |  | PT-10 ; Ceiling Grid and Service Tile (TR RM) | 12d | 2012-02-27 | 2012-03-11 | T10TR09205C0 SS+15d, T10TR09901C0 |  |  |  |  | 29d | 0d | CEILING GRID FOR GYPSUM [297.07 h]; CEILING GRID FOR GYPSUM [25.26 m2]; Cost |  |  | 336 | 1327 | T10TR09501C0 | PT | C |  | 10 | TR | CE | 095 | 01 | BILL 10 | B10 | S2 | 01 | R00 | ACF06 | 095 |  |  |  |  |  | 1 |
| T10TR09903C0 |  | PT-10 ; Wall - Final Paint (TR RM) | 12d | 2012-02-27 | 2012-03-11 | T10TR09901C0 |  |  |  |  | 139d | 110d | WALL PAINT [20 h]; WALL PAINT [24 m2]; Cost |  |  | 361 | 1312 | T10TR09903C0 | PT | C |  | 10 | TR | PA | 099 | 03 | BILL 10 | B10 | S2 | 02 | R00 | ACF06 | 099 |  |  |  |  |  |  |
| T10TR21115C0 |  | PT-10 ; 2nd Fix, Gaseous Fire Suppression (TR RM) | 36d | 2012-02-27 | 2012-04-08 | T10TR09601C0 |  |  |  |  | 71d | 42d | MECHANICAL [2626.8 h]; Cost |  |  | 411 | 20001130 | T10TR21115C0 | PT | C |  | 10 | TR | ME | 211 | 15 | BILL 10 | B10 | S2 | 2F | R00 | ACF07 | 211 | 2n | MEP |  |  |  |  |
| T10TR08105C0 |  | PT-10 ; Doors (TR RM) | 18d | 2012-03-12 | 2012-04-01 | T10TR08101C0, T10TR09501C0, T10TR09601C0, T10TR09901C0 |  |  |  |  | 105d | 0d | ASSORTED DOORS [40 h]; ASSORTED DOORS [4 no]; Cost |  |  | 317 | 1325 | T10TR08105C0 | PT | C | 08 | 10 | TR | DO | 081 | 05 | BILL 10 | B10 | S2 | DR | R00 | ACF06 | 081 |  |  |  |  |  |  |
| T10TR09905C0 |  | PT-10 ; Ceiling Prime & 1st coat (TR RM) | 18d | 2012-03-12 | 2012-04-01 | T10TR09501C0 |  |  |  |  | 109d | 62d | CEILING PAINT [4 h]; CEILING PAINT [3 m2]; Cost |  |  | 362 | 1313 | T10TR09905C0 | PT | C |  | 10 | TR | PA | 099 | 05 | BILL 10 | B10 | S2 | 01 | R00 | ACF06 | 099 |  |  |  |  |  |  |
| T10TR23003C0 |  | PT-10 ; Final Fix, Inst of Grilles & Diffusers (TR RM) | 30d | 2012-03-12 | 2012-04-15 | T10TR09501C0 |  |  |  |  | 65d | 36d | MECHANICAL [1498.8 h]; Cost |  |  |  |  | T10TR23003C0 | PT | C |  | 10 | TR | ME | 230 | 03 | BILL 10 | B10 | S2 | FF | R00 | ACF07 | 230 | FF | MEP |  |  |  |  |
| T10TR23023C0 |  | PT-10 ; 2nd Fix, Flexible ducts (TR RM) | 30d | 2012-03-12 | 2012-04-15 | T10TR09205C0, T10TR09501C0 |  |  |  |  | 53d | 24d | MECHANICAL [30 h]; Cost |  |  | 412 | 20001140 | T10TR23023C0 | PT | C |  | 10 | TR | ME | 230 | 23 | BILL 10 | B10 | S2 | 2F | R00 | ACF07 | 230 | 2n | MEP |  |  |  |  |
| T10TR23074C0 |  | PT-10 ; Final Fix, Grilles, panels & diffusers (TR RM) | 30d | 2012-03-12 | 2012-04-15 | T10TR09501C0 |  |  |  |  | 65d | 36d | MECHANICAL [1498.8 h]; Cost |  |  | 419 | 20001160 | T10TR23074C0 | PT | C |  | 10 | TR | ME | 230 | 74 | BILL 10 | B10 | S2 | FF | R00 | ACF07 | 230 | FF | MEP |  |  |  |  |
| T10TR26005C0 |  | PT-10 ; 2nd Fix, Wiring for Power/Lighting/Emergency (TR RM) | 30d | 2012-03-12 | 2012-04-15 | T10TR26026C0, T10TR09501C0 |  |  |  |  | 65d | 36d | ELECTRICAL [392.4 h]; Cost |  |  |  |  | T10TR26005C0 | PT | C |  | 10 | TR | ME | 260 | 05 | BILL 10 | B10 | S2 | 2F | R00 | ACF07 | 260 | 2n | MEP |  |  |  |  |
| T10TR26015C0 |  | PT-10 ; Final Fix, Inst of Ceiling rose (TR RM) | 30d | 2012-03-12 | 2012-04-15 | T10TR09501C0 |  |  |  |  | 65d | 36d | ELECTRICAL [61.2 h]; Cost |  |  |  |  | T10TR26015C0 | PT | C |  | 10 | TR | ME | 260 | 15 | BILL 10 | B10 | S2 | FF | R00 | ACF07 | 260 | FF | MEP |  |  |  |  |
| T10TR26019C0 |  | PT-10 ; Final Fix, Inst of Light fittings (TR RM) | 36d | 2012-03-12 | 2012-04-22 | T10TR09501C0 |  |  |  |  | 59d | 30d | ELECTRICAL [7815.6 h]; Cost |  |  |  |  | T10TR26019C0 | PT | C |  | 10 | TR | ME | 260 | 19 | BILL 10 | B10 | S2 | FF | R00 | ACF07 | 260 | FF | MEP |  |  |  |  |
| T10TR26076C0 |  | PT-10 ; Final Fix, Lighting fittings (TR RM) | 36d | 2012-03-12 | 2012-04-22 | T10TR09501C0 |  |  |  |  | 59d | 30d | ELECTRICAL [7815.6 h]; Cost |  |  | 420 | 20001170 | T10TR26076C0 | PT | C |  | 10 | TR | ME | 260 | 76 | BILL 10 | B10 | S2 | FF | R00 | ACF07 | 260 | FF | MEP |  |  |  |  |
| T10TR27002C0 |  | PT-10 ; 2nd Fix, Dressing of ELV panels (TR RM) | 30d | 2012-03-12 | 2012-04-15 | T10TR09205C0, T10TR27020C0 SS |  |  |  |  | 29d | 0d | ELECTRICAL [273.6 h]; Cost |  |  |  |  | T10TR27002C0 | PT | C |  | 10 | TR | ME | 270 | 02 | BILL 10 | B10 | S2 | 2F | R00 | ACF07 | 270 | 2n | MEP |  |  |  |  |
| T10TR27020C0 |  | PT-10 ; 2nd Fix, Inst of ELV Equipment (Panels) (TR RM) | 48d | 2012-03-12 | 2012-05-06 | T10TR09205C0, T10TR09501C0 |  |  |  |  | 29d | 0d | ELECTRICAL [1819.2 h]; Cost |  |  |  |  | T10TR27020C0 | PT | C |  | 10 | TR | ME | 270 | 20 | BILL 10 | B10 | S2 | 2F | R00 | ACF04 | 270 | 2n | MEP |  |  | E |  |
| T10TR23013C0 |  | PT-10 ; 2nd Fix, Insulation of CHW pipe & Duct (TR RM) | 48d | 2012-03-19 | 2012-05-13 | T10TR23009C0, T10TR23011C0 |  |  |  |  | 29d | 0d | MECHANICAL [3064.8 h]; Cost |  |  |  |  | T10TR23013C0 | PT | C |  | 10 | TR | ME | 230 | 13 | BILL 10 | B10 | S2 | 2F | R00 | ACF07 | 230 | 2n | MEP |  |  |  |  |
| T10TR08709C0 |  | PT-10 ; Ironmongery (TR RM) | 16d | 2012-04-02 | 2012-04-19 | T10TR08105C0 |  |  |  |  | 105d | 76d | IRONMONGERY [50 h]; IRONMONGERY [5 no]; Cost |  |  | 322 | 20001100 | T10TR08709C0 | PT | C | 08 | 10 | TR | DO | 087 | 09 | BILL 10 | B10 | S2 | IM | R00 | ACF06 | 087 |  |  |  |  |  |  |
| T10TR26013C0 |  | PT-10 ; Final Fix, Termination & Gladding of Cables (TR RM) | 30d | 2012-04-09 | 2012-05-13 | T10TR26009C0, T10TR09501C0 |  |  |  |  | 41d | 12d | ELECTRICAL [148.8 h]; Cost |  |  |  |  | T10TR26013C0 | PT | C |  | 10 | TR | ME | 260 | 13 | BILL 10 | B10 | S2 | FF | R00 | ACF07 | 260 | FF | MEP |  |  |  |  |
| T10TR27030C0 |  | PT-10 ; Final Fix, Inst of ELV device (Detector/Speaker) (TR RM) | 36d | 2012-04-16 | 2012-05-27 | T10TR27002C0, T10TR09501C0 |  |  |  |  | 29d | 0d | ELECTRICAL [3571.2 h]; Cost |  |  |  |  | T10TR27030C0 | PT | C |  | 10 | TR | ME | 270 | 30 | BILL 10 | B10 | S2 | FF | R00 | ACF07 | 270 | FF | MEP |  |  |  |  |
| T10TR01006C0 |  | PT-10 ; 2nd, Ceiling Inspection by Consultants (TR RM) | 12d | 2012-05-14 | 2012-05-27 | T10TR23009C0, T10TR23011C0, T10TR23013C0, T10TR23023C0, T10TR26007C0, T10TR09501C0 |  |  |  |  | 29d | 0d | Labor General [1.2 h]; Cost |  |  |  |  | T10TR01006C0 | PT | C |  | 10 | TR | ME | 010 | 06 | BILL 10 | B10 | S2 | CI | R00 | ACF07 | 010 | 2n | MEP |  |  |  |  |
| T10TR09503C0 |  | PT-10 ; Ceiling closure (TR RM) | 14d | 2012-05-28 | 2012-06-12 | T10TR01006C0, T10TR09501C0, T10TR21115C0, T10TR26005C0, T10TR26007C0, T10TR26026C0, T10TR26027C0, T10TR23074C0, T10TR23003C0, T10TR26076C0, T10TR26015C0, T10TR26013C0, T10TR26019C0, T10TR27030C0, T10TR23023C0 |  |  |  |  | 29d | 0d | ASSORTED CEILING FINISH [33.21 h]; CEILING GYPSUM [8.2 h]; ASSORTED CEILING FINISH [54 m2]; CEILING GYPSUM [25 m2]; Cost |  |  | 337 | 20001080 | T10TR09503C0 | PT | C |  | 10 | TR | CE | 095 | 03 | BILL 10 | B10 | S2 | 02 | R00 | ACF06 | 095 |  |  |  |  |  |  |
| T10TR09907C0 |  | PT-10 ; Ceiling - Final paint (TR RM) | 12d | 2012-06-13 | 2012-06-27 | T10TR09905C0, T10TR09503C0 |  |  |  |  | 47d | 18d | CEILING PAINT [2 h]; CEILING PAINT [1 m2]; Cost |  |  | 363 | 1314 | T10TR09907C0 | PT | C |  | 10 | TR | PA | 099 | 07 | BILL 10 | B10 | S2 | 02 | R00 | ACF06 | 099 |  |  |  |  |  |  |
| T10TR26017C0 |  | PT-10 ; Final Fix, Inst of Switch/Sockets (TR RM) | 12d | 2012-06-13 | 2012-06-27 | T10TR09901C0, T10TR09503C0 |  |  |  |  | 29d | 0d | ELECTRICAL [362.4 h]; Cost |  |  |  |  | T10TR26017C0 | PT | C |  | 10 | TR | ME | 260 | 17 | BILL 10 | B10 | S2 | FF | R00 | ACF07 | 260 | FF | MEP |  |  |  |  |
| T10TR01802C0 |  | PT-10 ; MEP de-snag, FIREM sign-off | 18d | 2012-06-28 | 2012-07-18 | T10TR23074C0, T10TR23003C0, T10TR26076C0, T10TR26013C0, T10TR26015C0, T10TR26019C0, T10TR27030C0, T10TR26017C0 |  |  |  |  | 29d | 0d | TESTING & COMMISSIONING [255 h]; Cost |  |  |  |  | S05CO01851C0 | PT | C |  | 10 | TR | SC | 018 | 53 | BILL 10 | B10 | S2 | 01 | R00 | ACF07 | 018 |  |  |  |  |  |  |
| T10TR01801C0 |  | PT-10 ; Touch-up & Clean / JV inspection /CIR /De-snag | 24d | 2012-07-19 | 2012-08-15 | T10TR01802C0, T10TR08709C0, T10TR09601C0, T10TR09903C0, T10TR09907C0, T10TR09503C0 |  |  |  |  | 29d | 0d | TESTING & COMMISSIONING [64 h]; Cost |  |  | 396 |  | T10TR01851C0 | PT | C |  | 10 | TR | SC | 018 | 51 | BILL 10 | B10 | S2 | 02 | R00 | ACF07 | 018 |  |  |  |  |  |  |
| T10TR01803C0 |  | PT-10 ; Consultant's final de-snag inspection | 12d | 2012-08-16 | 2012-09-01 | T10TR01801C0 |  |  |  |  | 29d | 10.44d | Labor General [1 h]; Cost |  |  |  |  | CP3TS01803C0 | PT | C |  | 10 | TR | SC | 018 | 03 | BILL 10 | B10 | S1 | 03 | R00 | ACF07 | 018 |  |  |  |  |  |  |

| ID | WBS | Activity | Duration | Start | Finish | Predecessors | Complete | Remaining | Planned start | Planned finish | Total float | Free float | Resources | Cost | Actual cost | change id | RENZ % COMPLETE | Phase | CCAD BUILDING(SET) | CCAD PHASE(SET) | CCAD FLOOR(SET) | CCAD ZONE(SET) | CCAD WORK(SET) | CCAD SECTION(SET) | CCAD SERIAL No.(SET) | Area/ Department | Grids | Are | Weight & Nos | Process | Levels | CCAD CBS(SET) | CCAD BILL(SET) | CCAD HANDOVER(SET) | CCAD TAG(SET) | CCAD REV(SET) | CCADACF (SET) | CCAD SSCF | Claimed This Month | CCAD CSA | P_811 | P_711 | U% | July2011 Target% Complete | CCAD SUB ZONE MEP(SET) | user_number8 | user_integer1 | user_integer2 | user_number7 | Act Selector % | Change Order # | NEW ACTIVITY ID | CCAD DIVISION(SET) | CCAD MEQ |
| --- | --- | --- | --- | --- | --- | --- | --- | --- | --- | --- | --- | --- | --- | --- | --- | --- | --- | --- | --- | --- | --- | --- | --- | --- | --- | --- | --- | --- | --- | --- | --- | --- | --- | --- | --- | --- | --- | --- | --- | --- | --- | --- | --- | --- | --- | --- | --- | --- | --- | --- | --- | --- | --- | --- |
|  | 11 | **Level 11** |  | 2011-01-23 | 2013-01-27 |  |  |  |  |  |  |  |  |  |  |  |  |  |  |  |  |  |  |  |  |  |  |  |  |  |  |  |  |  |  |  |  |  |  |  |  |  |  |  |  |  |  |  |  |  |  |  |  |  |
|  | 01 | **Structure & Envelopment** |  | 2011-01-23 | 2012-03-11 |  |  |  |  |  |  |  |  |  |  |  |  |  |  |  |  |  |  |  |  |  |  |  |  |  |  |  |  |  |  |  |  |  |  |  |  |  |  |  |  |  |  |  |  |  |  |  |  |  |
| T11SA03301C0 |  | PT-11 ; Corewall Concrete (Zone SA) | 3.88d | 2011-01-23 A | 2011-01-29 A | T10SA03301C0 | 100% |  | 2011-02-21 | 2011-02-24 |  |  | CONCRETE [6280 h]; CONCRETE [158 m3]; Cost |  |  | T11SA03301C0 | 100 | Z2 | PT | C | 11 | SA | CT | 033 | 01 | PA | TRUS | D | A10 | EREC | 10FLR | BILL 10 | B10 | S2 | 04 | R00 | ACF03 | 033 |  |  |  |  |  |  |  |  |  |  |  |  |  |  |  |  |
| T11SB03303C0 |  | PT-11 ; Corewall Concrete (Zone SB) | 3.88d | 2011-01-30 A | 2011-02-26 A | T10SB03303C0 | 100% |  | 2011-02-21 | 2011-02-24 |  |  | CONCRETE [6280 h]; CONCRETE [158 m3]; Cost |  |  | T11SB03303C0 | 100 | Z2 | PT | C | 11 | SB | CT | 033 | 03 | PA | TRUS | D | A10 | EREC | 10FLR | BILL 10 | B10 | S2 | 04 | R00 | ACF03 | 033 |  |  |  |  |  |  |  |  |  |  |  |  |  |  |  |  |
| T11CO05103C0 |  | PT-11 ; Alignment & welding of 11th Floor (Common Zone) | 3d | 2011-04-19 A | 2011-06-08 A | T11CO05101C0 | 100% |  | 2011-05-15 | 2011-05-18 |  |  | STRUCTURAL STEEL [1152 h]; Cost |  |  | T11CO05103C0 | 95 | Z2 | PT | C | 11 | CO | ST | 051 | 03 | PA | 10TH | E | A12A | EREC | 11FLR | BILL 10 | B10 | S2 | 02 | R00 | ACF03 | 051 | 23188.5 | ST |  |  |  |  |  |  |  |  |  |  |  |  |  |  |
| T11CO05101C0 |  | PT-11 ; Erection of Structural Steel of 11 th Floor (Common Zone) | 5d | 2011-04-20 A | 2011-06-08 A | T10CO05103C0, T11SA03301C0, T11SB03303C0 | 100% |  | 2011-05-09 | 2011-05-15 |  |  | STRUCTURAL STEEL [8894 h]; STRUCTURAL STEEL [290 T(Fe)]; Cost |  |  | T11CO05101C0 | 95 | Z2 | PT | C | 11 | CO | ST | 051 | 01 | PA | 10TH | E | A12A | EREC | 11FLR | BILL 10 | B10 | S2 | 01 | R00 | ACF03 | 051 | 208695.5 | ST |  |  |  |  |  |  |  |  |  |  |  |  |  |  |
| T11CO05305C0 |  | PT-11 ; Metal Decking 11 FLR (Common Zone) | 12d | 2011-06-01 A | 2011-06-14 A | T11CO05103C0, T12CO05101C0 | 100% |  | 2011-06-01 | 2011-06-15 |  |  | METAL DECKING [2760 h]; METAL DECKING [3493 m2]; Cost |  |  | T11CO05305C0 |  | Z2 | PT | C | 11 | CO | ST | 053 | 05 | PA | 10TH | E | A12A | MDEC | 11FLR | BILL 10 | B10 | S2 | 03 | R00 | ACF03 | 053 | 446383.08 | ST |  |  |  |  |  |  |  |  |  |  |  |  |  |  |
| T11CO03399C0 |  | PT-11 ; Concrete on Metal Decking 11 FLR (Common Zone) | 10d | 2011-06-15 A | 2011-07-31 A | T11CO05305C0 | 100% |  | 2011-06-15 | 2011-06-27 |  |  | CONCRETE [23776 h]; CONCRETE [598 m3]; Cost |  |  | T11CO05335C0 |  | Z2 | PT | C | 11 | CO | CT | 033 | 99 | PA | 10TH | E | A12A | MDEC | 11FLR | BILL 10 | B10 | S2 | 08 | R00 | ACF03 | 033 | 490200.82 |  |  |  |  |  |  |  |  |  |  |  |  |  |  |  |
| T11CO07807C0 |  | PT-11 ; Cementitious Fire Proofing Lvl 11 (Common Zone) | 12d | 2011-07-10 A | 2011-07-25 A | T12CO03399C0 | 100% |  | 2011-07-12 | 2011-07-25 |  |  | CEMENTITIOUS FIREPROOFING [3066 h]; CEMENTITIOUS FIREPROOFING [6132 m2]; Cost |  |  | T11CO07807C0 |  | Z2 | PT | C | 11 | CO | ST | 078 | 07 | PA | 10TH | E | A12A | FIRE | 11FLR | BILL 10 | B10 | S2 | 04 | R00 | ACF03 | 078 |  | ST | 100 | 95 |  |  |  |  |  |  |  |  |  |  |  |  |
| T11CO04403C0 |  | PT-11 ; C2 Bracket (Common Zone) | 42d | 2011-09-05 A | 2011-10-19 | T11CO07807C0, T12CO04403C0 SS | 63% | 15.54d | 2011-09-10 | 2011-10-29 | 42.41d | 0d | FACADE CURTAIN WALL 2 [522.3 h]; Cost |  |  | T11CO04403C0 |  |  | PT | C | 11 | CO | FA | 044 | 03 |  |  |  |  |  |  | BILL 10 | B10 | S2 | FC2 | R00 | ACF05 | 044 |  | FA |  |  | 22 |  |  |  |  |  |  |  |  |  |  |  |
| T11CO04405C0 |  | PT-11 ; C2 Transom & Mullion (Common Zone) | 42d | 2011-09-05 A | 2011-11-10 | T11CO04403C0 FF+14d | 22% | 32.76d | 2011-09-26 | 2011-11-17 | 53.49d | 0d | FACADE CURTAIN WALL 2 [2088.7 h]; Cost |  |  | T11CO04405C0 |  |  | PT | C | 11 | CO | FA | 044 | 05 |  |  |  |  |  |  | BILL 10 | B10 | S2 | FC2 | R00 | ACF05 | 044 |  | FA |  |  | 22 |  |  |  |  |  |  |  |  |  |  |  |
| T11CO04407C0 |  | PT-11 ; C2 Glazing (Common Zone) | 42d | 2011-09-05 A | 2011-11-10 | T11CO04405C0 SS, T11CO04405C0 FF | 22% | 32.76d | 2011-09-26 | 2011-11-17 | 53.49d | 15.24d | FACADE CURTAIN WALL 2 [4766.9 h]; FACADE CURTAIN WALL 2 [1742 m2]; FACADE TOTAL QUANTITY m2 [1742 m2]; Cost |  |  | T11CO04407C0 |  |  | PT | C | 11 | CO | FA | 044 | 07 |  |  |  |  |  |  | BILL 10 | B10 | S2 | FC2 | R00 | ACF05 | 044 |  | FA |  |  | 22 |  |  |  |  |  |  |  |  |  |  |  |
| T11CO04415C0 |  | PT-11 ; SG Catwalk Installation (Common Zone) | 52d | 2012-01-09 | 2012-03-11 | TEXCO04403C0 SS+14d, T10CO04415C0 SS |  |  |  |  | 65.03d | 0d | Labor General [4687.6 h]; Cost |  |  | I05CO04411C0 |  |  | PT | C | 11 | CO | FA | 044 | 11 |  |  |  |  |  |  | BILL 10 | B10 | S2 | SG | R00 | ACF05 | 044 |  | FA |  |  |  |  |  |  |  |  |  |  |  |  |  |  |
|  | 02 | **PAT RM-1** |  | 2011-06-27 | 2012-12-24 |  |  |  |  |  |  |  |  |  |  |  |  |  |  |  |  |  |  |  |  |  |  |  |  |  |  |  |  |  |  |  |  |  |  |  |  |  |  |  |  |  |  |  |  |  |  |  |  |  |
| T11P126009C0 |  | PT-11 ; 2nd Fix, Inst of Wall conduites (PAT RM-1) | 36d | 2011-06-27 A | 2012-01-11 | T11P109201C0 | 5% | 34.2d | 2011-08-27 | 2011-10-09 | 52.05d | 7.8d | ELECTRICAL [734.4 h]; Cost [37790.1 AED] | 37,790.1 | 1,889.5 | T11P126009C0 |  |  | PT | C | 11 | P1 | ME | 260 | 09 |  |  |  |  |  |  | BILL 10 | B10 | S2 | 2F | R00 | ACF07 | 260 | 2219.22 | MEP |  |  |  | 25 | 2n |  |  |  |  |  |  |  |  |  |
| T11P122019C0 |  | PT-11 ; 1st Fix, Inst of Drainage pipe (ceiling) (PAT RM-1) | 36d | 2011-07-05 A | 2011-10-31 | T11P123001C0 SS | 25% | 27d | 2011-10-23 | 2011-12-08 | 62.25d | 18d | PLUMBING [1378.8 h]; Cost [74493.8 AED] | 74,493.83 | 18,623.46 | T11P122019C0 |  |  | PT | C | 11 | P1 | ME | 220 | 19 |  |  |  |  |  |  | BILL 10 | B10 | S2 | 1F | R00 | ACF04 | 220 |  | MEP | 10 | 2 | 15 |  | 1S | 0 | 0 | 0 | 0 | M1F |  |  |  |  |
| T11P109201C0 |  | PT-11 ; Metal Studs (PAT RM-1) | 60d | 2011-07-10 A | 2011-11-29 | T11P123001C0, T11CO04405C0 FF, T11CO04407C0 FF | 50% | 30d | 2011-08-27 | 2011-11-09 | 38.25d | 0d | PARTITIONS [3551 h]; PARTITIONS - Metal Studs [493 m]; Cost |  |  | T11P109201C0 |  |  | PT | C | 11 | P1 | PT | 092 | 01 |  |  |  |  |  |  | BILL 10 | B10 | S2 | 1F | R00 | ACF06 | 092 |  | GP | 50 | 30 |  |  |  |  |  |  |  | PMS | 313 | 944 |  |  |
| T11P123001C0 |  | PT-11 ; 1st Fix, Inst. of Supports for MEP (PAT RM-1) | 120d | 2011-07-11 A | 2011-10-20 | T11CO07807C0 | 85% | 18d | 2011-08-11 | 2012-01-07 | 38.25d | 0d | MECHANICAL [800.4 h]; Cost [45150.4 AED] | 45,150.38 | 38,377.83 | T11P123001C0 |  |  | PT | C | 11 | P1 | ME | 230 | 01 |  |  |  |  |  |  | BILL 10 | B10 | S2 | 1F | R00 | ACF04 | 230 | 2618.72 | MEP | 85 | 10 | 85 | 25 | 1S | 0 | 0 | 0 | 0 | M1F |  |  |  |  |
| T11P109203C0 |  | PT-11 ; Partitions 1st face (PAT RM-1) | 45d | 2011-08-10 A | 2012-01-10 | T11P109201C0 | 25% | 33.75d | 2011-12-08 | 2012-01-31 | 58.5d | 15.25d | PARTITIONS [493 m]; PARTITIONS [2772 h]; Cost |  |  | T11P109203C0 |  |  | PT | C | 11 | P1 | PT | 092 | 03 |  |  |  |  |  |  | BILL 10 | B10 | S2 | 2F | R00 | ACF06 | 092 |  | GP | 10 | 0 |  |  |  | 0 | 0 | 0 | 0 | P1F | 314 | 945 |  |  |
| T11P122005C0 |  | PT-11 ; 1st Fix, Inst of Water supply pipe (ceiling) (PAT RM-1) | 60d | 2011-09-05 A | 2011-12-28 | T11P122019C0 SS+12d, T11P123001C0 | 10% | 54d | 2011-09-22 | 2011-12-06 | 44.25d | 0d | PLUMBING [4548 h]; Cost [245665 AED] | 245,664.7 | 24,566.47 | T11P122005C0 |  |  | PT | C | 11 | P1 | ME | 220 | 05 |  |  |  |  |  |  | BILL 10 | B10 | S2 | 1F | R00 | ACF04 | 220 |  | MEP |  |  |  |  | 1S |  |  |  |  | M1F |  |  |  |  |
| T11P126007C0 |  | PT-11 ; 2nd Fix, Cable Pulling (PAT RM-1) | 48d | 2011-09-05 A | 2011-12-19 | T11P109201C0 SS+6d | 5% | 45.6d | 2011-10-10 | 2011-12-11 | 70.65d | 26.4d | ELECTRICAL [2683.2 h]; Cost [134522 AED] | 134,521.96 | 6,726.1 | T11P126007C0 |  |  | PT | C | 11 | P1 | ME | 260 | 07 |  |  |  |  |  |  | BILL 10 | B10 | S2 | 2F | R00 | ACF07 | 260 |  | MEP |  |  |  |  | 2n |  |  |  |  |  |  |  |  |  |
| T11P126013C0 |  | PT-11 ; 1st Fix, Inst of Cable Tray (PAT RM-1) | 48d | 2011-09-05 A | 2011-12-27 | T11CO07807C0, T11P123001C0, T11P127010C0 SS+12d | 20% | 38.4d | 2011-10-23 | 2011-12-22 | 99.85d | 4.8d | ELECTRICAL [399.6 h]; Cost [21571.3 AED] | 21,571.27 | 4,314.25 | T11P126013C0 |  |  | PT | C | 11 | P1 | ME | 260 | 13 |  |  |  |  |  |  | BILL 10 | B10 | S2 | 1F | R00 | ACF04 | 260 |  | MEP |  |  |  |  | 1S |  |  |  |  | M1F |  |  |  |  |
| T11P127010C0 |  | PT-11 ; 1st Fix, Inst of Trunking for ELV system (PAT RM-1) | 48d | 2011-09-05 A | 2012-01-03 | T11CO07807C0, T11P123001C0, T11P126001C0 SS+14d | 10% | 43.2d | 2011-10-09 | 2011-12-08 | 95.05d | 0d | ELECTRICAL [1512 h]; Cost [79240.1 AED] | 79,240.08 | 7,924.01 | T11P127010C0 |  |  | PT | C | 11 | P1 | ME | 270 | 10 |  |  |  |  |  |  | BILL 10 | B10 | S2 | 1F | R00 | ACF04 | 270 |  | MEP |  |  |  |  | 1S |  |  |  |  | M1F |  |  |  |  |
| T11P121111C0 |  | PT-11 ; 1st Fix, Inst of Sprinkler main pipe (PAT RM-1) | 48d | 2011-10-22 | 2011-12-21 | T11P122005C0 SS+14d, T11P123001C0 |  |  |  |  | 44.25d | 0d | MECHANICAL [853.2 h]; Cost |  |  | T11P121111C0 |  |  | PT | C | 11 | P1 | ME | 211 | 11 |  |  |  |  |  |  | BILL 10 | B10 | S2 | 1F | R00 | ACF04 | 211 |  | MEP |  |  |  |  | 1S |  |  |  |  | M1F |  |  |  |  |
| T11P126001C0 |  | PT-11 ; 1st Fix, Inst of Trunking/Conduiting (PAT RM-1) | 48d | 2011-10-22 | 2011-12-21 | T11CO07807C0, T11P123001C0 |  |  |  |  | 95.05d | 0d | ELECTRICAL [734.4 h]; Cost |  |  | T11P126001C0 |  |  | PT | C | 11 | P1 | ME | 260 | 01 |  |  |  |  |  |  | BILL 10 | B10 | S2 | 1F | R00 | ACF04 | 260 | 2219.22 | MEP |  |  |  | 25 | 1S |  |  |  |  | M1F |  |  |  |  |
| T11P122007C0 |  | PT-11 ; 1st Fix, Inst of Medical Gas pipe (PAT RM-1) | 48d | 2011-11-10 | 2012-01-08 | T11P121111C0 SS+14d, T11P123001C0 |  |  |  |  | 60.25d | 16d | PLUMBING [1149.6 h]; Cost |  |  | T11P122007C0 |  |  | PT | C | 11 | P1 | ME | 220 | 07 |  |  |  |  |  |  | BILL 10 | B10 | S2 | 1F | R00 | ACF04 | 220 |  | MEP |  |  |  |  | 1S |  |  |  |  | M1F |  |  |  |  |
| T11P123017C0 |  | PT-11 ; 1st Fix, Inst of CHW pipe (PAT RM-1) | 54d | 2011-11-15 | 2012-01-19 | T11P121111C0 SS+12d, T11P123001C0, T11P105503C0 FF+18d |  |  |  |  | 38.25d | 0d | MECHANICAL [2467.2 h]; Cost |  |  | T11P123017C0 |  |  | PT | C | 11 | P1 | ME | 230 | 17 |  |  |  |  |  |  | BILL 10 | B10 | S2 | 1F | R00 | ACF04 | 230 |  | MEP |  |  |  |  | 1S |  |  |  |  | M1F |  |  |  |  |
| T11P123023C0 |  | PT-11 ; 1st Fix, Inst of Main Ducting (PAT RM-1) | 60d | 2011-11-28 | 2012-02-08 | T11P123001C0, T11P123017C0 SS+10d |  |  |  |  | 64.25d | 0d | MECHANICAL [8022 h]; Cost |  |  | T11P123023C0 |  |  | PT | C | 11 | P1 | ME | 230 | 23 |  |  |  |  |  |  | BILL 10 | B10 | S2 | 1F | R00 | ACF04 | 230 |  | MEP |  |  |  |  | 1S |  |  |  |  | M1F |  |  |  |  |
| T11P105503C0 |  | PT-11 ; Ceiling Support for medical equipment (PAT RM-1) | 24d | 2011-11-30 | 2011-12-28 | T11P109201C0, TAFCI22011R20 FS+58d |  |  |  |  | 38.25d | 0d | SECONDARY STEEL [62 h]; STRUCTURAL STEEL [28 T(Fe)]; Cost |  |  | D03EY05503C0 |  |  | PT | C | 11 | P1 | SW | 055 | 03 |  |  |  |  |  |  | BILL 10 | B10 | S2 | 03 | R00 | ACF03 | b |  |  |  |  |  |  |  |  |  |  |  |  | 335 | 962 |  |  |
| T11P122011C0 |  | PT-11 ; 2nd Fix, Drainage/Water pipe (wall) (PAT RM-1) | 42d | 2011-11-30 | 2012-01-19 | T11P109201C0 |  |  |  |  | 44.25d | 0d | PLUMBING [1378.8 h]; Cost |  |  | T11P122011C0 |  |  | PT | C | 11 | P1 | ME | 220 | 11 |  |  |  |  |  |  | BILL 10 | B10 | S2 | 2F | R00 | ACF07 | 220 |  | MEP |  |  |  |  | 2n |  |  |  |  |  |  |  |  |  |
| T11P122015C0 |  | PT-11 ; 2nd Fix, Medical Gas pipe (PAT RM-1) | 42d | 2011-11-30 | 2012-01-19 | T11P109201C0, T11P122007C0 SS |  |  |  |  | 44.25d | 0d | PLUMBING [1149.6 h]; Cost |  |  | T11P122015C0 |  |  | PT | C | 11 | P1 | ME | 220 | 15 |  |  |  |  |  |  | BILL 10 | B10 | S2 | 2F | R00 | ACF07 | 220 |  | MEP |  |  |  |  | 2n |  |  |  |  |  |  |  |  |  |
| T11P109702C0 |  | PT-11 ; Installation of Bathroom Pods (PAT RM-1) | 0d | 2011-12-11 | 2011-12-11 | T10P109702C0, T10P209702C0, T11CO07807C0, AAFCI09201R02 FS+118d |  |  |  |  | 132.25d | 0d | Cost |  |  | T10P109701C0 |  |  | PT | C | 11 | P1 | BP | 097 | 01 |  |  |  |  |  |  | BILL 10 | B10 | S2 | FG | R00 | ACF06 | 097 |  |  |  |  |  |  |  |  |  |  |  |  | 105 | 1002 |  |  |
| T11P121117C0 |  | PT-11 ; 1st Fix, Inst of Sprinkler branch pipe (PAT RM-1) | 48d | 2011-12-22 | 2012-02-18 | T11P109201C0, T11P121111C0, T11P105503C0 FF+18d |  |  |  |  | 104.25d | 66d | MECHANICAL [561.6 h]; Cost |  |  | T11P121117C0 |  |  | PT | C | 11 | P1 | ME | 211 | 17 |  |  |  |  |  |  | BILL 10 | B10 | S2 | 1F | R00 | ACF04 | 211 |  | MEP |  |  |  |  | 1S |  |  |  |  | M1F |  |  |  |  |
| T11P108103C0 |  | PT-11 ; Door Frames (PAT RM-1) | 36d | 2011-12-28 | 2012-02-09 | T11P109201C0, GNHE08101C0 FS+126d |  |  |  |  | 81.25d | 38d | ASSORTED DOORS [303 h]; Cost |  |  | T11P108103C0 |  |  | PT | C | 11 | P1 | DO | 081 | 03 |  |  |  |  |  |  | BILL 10 | B10 | S2 | DF | R00 | ACF06 | 081 |  |  |  |  |  |  |  |  |  |  |  |  | 316 | 947 | 08 |  |
| T11P105511C0 |  | PT-11 ; Wall reinforcement for MEP/Medical (PAT RM-1) | 24d | 2011-12-31 | 2012-01-28 | T11P109201C0, TAFCI22011R02 FS+58d |  |  |  |  | 43.25d | 0d | SECONDARY STEEL [26 h]; Cost |  |  | T11P105511C0 |  |  | PT | C | 11 | P1 | SW | 055 | 11 |  |  |  |  |  |  | BILL 10 | B10 | S2 | 03 | R00 | ACF03 | b |  |  |  |  |  |  |  |  |  |  |  |  |  |  |  |  |
| T11P127001C0 |  | PT-11 ; 1st Fix, Wiring/ Cabling work (PAT RM-1) | 48d | 2012-01-03 | 2012-02-29 | T11P126001C0, T11P126013C0, T11P127010C0 |  |  |  |  | 95.05d | 56.8d | ELECTRICAL [392.4 h]; Cost |  |  | T11P127001C0 |  |  | PT | C | 11 | P1 | ME | 270 | 01 |  |  |  |  |  |  | BILL 10 | B10 | S2 | 1F | R00 | ACF04 | 270 |  | MEP |  |  |  |  | 1S |  |  |  |  | M1F |  |  |  |  |
| T11P101005C0 |  | PT-11 ; 2nd, Wall Inspection by Consultant (PAT RM-1) | 6d | 2012-01-21 | 2012-01-26 | T11P122011C0, T11P122015C0, T11P126007C0, T11P126009C0 |  |  |  |  | 44.25d | 1d | Labor General [1.2 h]; Cost |  |  | T11P101005C0 |  |  | PT | C | 11 | P1 | ME | 010 | 05 |  |  |  |  |  |  | BILL 10 | B10 | S2 | WI | R00 | ACF07 | 010 |  | MEP |  |  |  |  | 2n |  |  |  |  |  |  |  |  |  |
| T11P123009C0 |  | PT-11 ; 2nd Fix, Inst of VAV'S CHW connection (PAT RM-1) | 42d | 2012-01-21 | 2012-03-10 | T11P123017C0 |  |  |  |  | 38.25d | 0d | MECHANICAL [1450.8 h]; Cost |  |  | T11P123009C0 |  |  | PT | C | 11 | P1 | ME | 230 | 09 |  |  |  |  |  |  | BILL 10 | B10 | S2 | 2F | R00 | ACF07 | 230 |  | MEP |  |  |  |  | 2n |  |  |  |  |  |  |  |  |  |
| T11P109205C0 |  | PT-11 ; Partitions Closing (PAT RM-1) | 48d | 2012-01-29 | 2012-03-25 | T11P101005C0, T11P105511C0, T11P109203C0, T11P122005C0, T11P122019C0, TAFOA09214C1 FF, T11P109702C0 FF, T11P108103C0 FF |  |  |  |  | 43.25d | 0d | PARTITIONS [493 m]; PARTITIONS [3563 h]; Cost |  |  | T11P109205C0 |  |  | PT | C | 11 | P1 | PT | 092 | 05 |  |  |  |  |  |  | BILL 10 | B10 | S2 | FF | R00 | ACF06 | 092 |  | GP |  |  |  |  |  |  |  |  |  | P2F | 315 | 946 |  |  |
| T11P123008C0 |  | PT-11 ; 1st Fix, Inst of VCD's/FD's (PAT RM-1) | 48d | 2012-02-09 | 2012-04-04 | T11P123023C0, T11P105503C0 FF+18d |  |  |  |  | 64.25d | 26d | MECHANICAL [1753.2 h]; Cost |  |  | T11P123008C0 |  |  | PT | C | 11 | P1 | ME | 230 | 08 |  |  |  |  |  |  | BILL 10 | B10 | S2 | 1F | R00 | ACF04 | 230 |  | MEP |  |  |  |  | 1S |  |  |  |  | M1F |  |  |  |  |
| T11P123015C0 |  | PT-11 ; 2nd Fix, Insulation of CHW pipe & Duct (PAT RM-1) | 48d | 2012-03-11 | 2012-05-05 | T11P123009C0, T11P123017C0, T11P123023C0 |  |  |  |  | 38.25d | 0d | MECHANICAL [3064.8 h]; Cost |  |  | T11P123015C0 |  |  | PT | C | 11 | P1 | ME | 230 | 15 |  |  |  |  |  |  | BILL 10 | B10 | S2 | 2F | R00 | ACF07 | 230 |  | MEP |  |  |  |  | 2n |  |  |  |  |  |  |  |  |  |
| T11P107103C0 |  | PT-11 ; Waterproofing (PAT RM-1) | 11.88d | 2012-03-26 | 2012-04-08 | T11P108103C0, T11P109205C0 |  |  |  |  | 81.38d | 43.12d | THERMAL & MOISTURE [504 h]; THERMAL & MOISTURE [3326 m2]; Cost |  |  | T11P107103C0 |  |  | PT | C | 11 | P1 | FF | 071 | 03 |  |  |  |  |  |  | BILL 10 | B10 | S2 | 01 | R00 | ACF03 | 071 |  |  |  |  |  |  |  |  |  |  |  |  | 105 | 999 |  |  |
| T11P109901C0 |  | PT-11 ; Wall Prime & 1st coat (PAT RM-1) | 30d | 2012-03-26 | 2012-04-29 | T11P109205C0 |  |  |  |  | 43.25d | 0d | WALL PAINT [587 h]; WALL PAINT [731 m2]; Cost |  |  | T11P109901C0 |  |  | PT | C | 11 | P1 | PA | 099 | 01 |  |  |  |  |  |  | BILL 10 | B10 | S2 | 01 | R00 | ACF06 | 099 |  |  |  |  |  |  |  |  |  |  |  |  | 328 | 956 |  |  |
| T11P126005C0 |  | PT-11 ; 2nd Fix, Wiring for Power/Lighting/Emergency (PAT RM-1) | 42d | 2012-03-26 | 2012-05-13 | T11P109205C0 |  |  |  |  | 109.25d | 0d | ELECTRICAL [392.4 h]; Cost |  |  | T11P126005C0 |  |  | PT | C | 11 | P1 | ME | 260 | 05 |  |  |  |  |  |  | BILL 10 | B10 | S2 | 2F | R00 | ACF07 | 260 |  | MEP |  |  |  |  | 2n |  |  |  |  |  |  |  |  |  |
| T11P126011C0 |  | PT-11 ; 2nd Fix, Inst of Equipment (DB) (PAT RM-1) | 54d | 2012-03-26 | 2012-05-27 | T11P109205C0 |  |  |  |  | 125d | 67d | ELECTRICAL [878.4 h]; Cost |  |  | T11P126011C0 |  |  | PT | C | 11 | P1 | ME | 260 | 11 |  |  |  |  |  |  | BILL 10 | B10 | S2 | 2F | R00 | ACF04 | 260 |  | MEP |  |  |  |  | 2n |  |  |  |  |  |  |  |  | E |
| T11P126053C0 |  | PT-11 ; 2nd Fix, Wiring / Cabling (PAT RM-1) | 42d | 2012-03-26 | 2012-05-13 | T11P109203C0, T11P109205C0 |  |  |  |  | 51.25d | 13d | ELECTRICAL [392.4 h]; Cost |  |  | T11P126053C0 |  |  | PT | C | 11 | P1 | ME | 260 | 53 |  |  |  |  |  |  | BILL 10 | B10 | S2 | 2F | R00 | ACF07 | 260 |  | MEP |  |  |  |  | 2n |  |  |  |  |  | 389 | 977 |  |  |
| T11P105501C0 |  | PT-11 ; Handrails & balustrade (PAT RM-1) | 32d | 2012-04-30 | 2012-06-05 | T11P109901C0 |  |  |  |  | 117d | 23d | SECONDARY STEEL [230 h]; Cost |  |  | T11P105501C0 |  |  | PT | C | 11 | P1 | SW | 055 | 01 |  |  |  |  |  |  | BILL 10 | B10 | S2 | 01 | R00 | ACF03 | a |  |  |  |  |  |  |  |  |  |  |  |  |  |  |  |  |
| T11P109501C0 |  | PT-11 ; Ceiling Grid and Service Tile (PAT RM-1) | 20d | 2012-05-06 | 2012-05-28 | T11P105503C0, T11P109205C0 SS+15d, T11P121117C0, T11P123008C0, T11P123009C0, T11P123015C0, T11P127001C0, T11P126053C0 FF, T11P109901C0 |  |  |  |  | 38.25d | 0d | CEILING GRID FOR GYPSUM [4870 h]; CEILING GRID FOR GYPSUM [416.8 m2]; Cost |  |  | T11P109501C0 |  |  | PT | C | 11 | P1 | CE | 095 | 01 |  |  |  |  |  |  | BILL 10 | B10 | S2 | 01 | R00 | ACF06 | 095 |  |  |  |  |  |  |  |  |  |  |  |  | 323 | 952 |  |  |
| T11P109510C0 |  | PT-11 ; Patient Lift Ceiling Rail (by others) (PAT RM-1) | 30d | 2012-05-06 | 2012-06-09 | T11P109501C0 SS |  |  |  |  | 128.25d | 82.5d | Labor General [0.2 h]; Cost |  |  | I06P109501C0 |  |  | PT | C | 11 | P1 | CE | 095 | 10 |  |  |  |  |  |  | BILL 10 | B10 | S2 | 02 | R00 | ACF06 | 095 |  |  |  |  |  |  |  |  |  |  |  |  | 323 | 952 |  |  |
| T11P109305C0 |  | PT-11 ; Flooring (Terrazzo) (PAT RM-1) | 30d | 2012-05-29 | 2012-07-03 | T11P109501C0, T11P105501C0 FF |  |  |  |  | 94d | 0d | TERRAZO FLOOR [1427 m2]; TERRAZO FLOOR [2568 h]; Cost |  |  | T11P109305C0 |  |  | PT | C | 11 | P1 | FF | 096 | 05 |  |  |  |  |  |  | BILL 10 | B10 | S2 | 07 | R00 | ACF06 | TZ |  |  |  |  |  |  |  |  |  |  |  |  | 106 | 1000 |  |  |
| T11P109601C0 |  | PT-11 ; Flooring (Rubber & etc) (PAT RM-1) | 30d | 2012-05-29 | 2012-07-03 | T11P109501C0, T11P107103C0 |  |  |  |  | 38.25d | 0d | RUBBER FLOOR [32 h]; RUBBER FLOOR [73 m2]; Cost |  |  | T11P109601C0 |  |  | PT | C | 11 | P1 | FF | 096 | 01 |  |  |  |  |  |  | BILL 10 | B10 | S2 | 03 | R00 | ACF06 | RF |  |  |  |  |  |  |  |  |  |  |  |  | 326 | 955 |  |  |
| T11P109905C0 |  | PT-11 ; Ceiling Prime & 1st coat (PAT RM-1) | 30d | 2012-05-29 | 2012-07-03 | T11P109501C0 |  |  |  |  | 124d | 0d | CEILING PAINT [36 h]; CEILING PAINT [43 m2]; Cost |  |  | T11P109905C0 |  |  | PT | C | 11 | P1 | PA | 099 | 05 |  |  |  |  |  |  | BILL 10 | B10 | S2 | 01 | R00 | ACF06 | 099 |  |  |  |  |  |  |  |  |  |  |  |  | 330 | 958 |  |  |
| T11P121115C0 |  | PT-11 ; 2nd Fix, Inst of Sprinkler droppers (PAT RM-1) | 42d | 2012-05-29 | 2012-07-17 | T11P109501C0 |  |  |  |  | 54.25d | 0d | MECHANICAL [1602 h]; Cost |  |  | T11P121115C0 |  |  | PT | C | 11 | P1 | ME | 211 | 15 |  |  |  |  |  |  | BILL 10 | B10 | S2 | 2F | R00 | ACF07 | 211 |  | MEP |  |  |  |  | 2n |  |  |  |  |  |  |  |  |  |
| T11P123021C0 |  | PT-11 ; 2nd Fix, Inst of Flexible Duct & Plenum boxes (PAT RM-1) | 42d | 2012-05-29 | 2012-07-17 | T11P109205C0, T11P109501C0 |  |  |  |  | 54.25d | 0d | MECHANICAL [30 h]; Cost |  |  | T11P123021C0 |  |  | PT | C | 11 | P1 | ME | 230 | 21 |  |  |  |  |  |  | BILL 10 | B10 | S2 | 2F | R00 | ACF07 | 230 |  | MEP |  |  |  |  | 2n |  |  |  |  |  |  |  |  |  |
| T11P127002C0 |  | PT-11 ; 2nd Fix, Wiring Droppers (PAT RM-1) | 42d | 2012-05-29 | 2012-07-17 | T11P109501C0 |  |  |  |  | 48.25d | 0d | ELECTRICAL [392.4 h]; Cost |  |  | T11P127002C0 |  |  | PT | C | 11 | P1 | ME | 270 | 02 |  |  |  |  |  |  | BILL 10 | B10 | S2 | 2F | R00 | ACF07 | 270 |  | MEP |  |  |  |  | 2n |  |  |  |  |  |  |  |  |  |
| T11P127020C0 |  | PT-11 ; 2nd Fix, Inst of ELV Equipment (Panels) (PAT RM-1) | 66d | 2012-05-29 | 2012-08-14 | T11P109205C0, T11P109501C0 |  |  |  |  | 58d | 0d | ELECTRICAL [1819.2 h]; Cost |  |  | T11P127020C0 |  |  | PT | C | 11 | P1 | ME | 270 | 20 |  |  |  |  |  |  | BILL 10 | B10 | S2 | 2F | R00 | ACF04 | 270 |  | MEP |  |  |  |  | 2n |  |  |  |  |  |  |  |  | E |
| T11P140303C0 |  | PT-11 ; Final Fix, Pneumatic Station (PAT RM-1) | 36d | 2012-05-29 | 2012-07-10 | T11P109501C0 |  |  |  |  | 136d | 90.25d | MECHANICAL [2974.8 h]; Cost |  |  | T11P140303C0 |  |  | PT | C | 11 | P1 | ME | 403 | 03 |  |  |  |  |  |  | BILL 10 | B10 | S2 | FF | R00 | ACF07 | 403 |  | MEP |  |  |  |  | FF |  |  |  |  |  |  |  |  |  |
| T11P108107C0 |  | PT-11 ; Doors (PAT RM-1) | 36d | 2012-07-04 | 2012-08-14 | T11P108103C0, T11P109501C0, T11P109601C0, T11P109901C0 |  |  |  |  | 88.88d | 0d | ASSORTED DOORS [610 h]; ASSORTED DOORS [61 no]; Cost |  |  | T11P108107C0 |  |  | PT | C | 11 | P1 | DO | 081 | 07 |  |  |  |  |  |  | BILL 10 | B10 | S2 | DR | R00 | ACF06 | 081 |  |  |  |  |  |  |  |  |  |  |  |  | 317 | 948 | 08 |  |
| T11P109903C0 |  | PT-11 ; Wall Final Paint (PAT RM-1) | 30d | 2012-07-04 | 2012-08-07 | T11P109901C0, T11P109905C0, T11P109501C0 |  |  |  |  | 124d | 72d | WALL PAINT [316 h]; WALL PAINT [394 m2]; Cost |  |  | T11P109903C0 |  |  | PT | C | 11 | P1 | PA | 099 | 03 |  |  |  |  |  |  | BILL 10 | B10 | S2 | 02 | R00 | ACF06 | 099 |  |  |  |  |  |  |  |  |  |  |  |  | 329 | 957 |  |  |
| T11P122021C0 |  | PT-11 ; Final Fix, Terminate Sanitary Ware & Appliances (PAT RM-1) | 42d | 2012-07-11 | 2012-08-30 | T11P122011C0, T11P122025C0 SS+6d |  |  |  |  | 94d | 48.25d | PLUMBING [3361.2 h]; Cost |  |  | T11P122021C0 |  |  | PT | C | 11 | P1 | ME | 220 | 21 |  |  |  |  |  |  | BILL 10 | B10 | S2 | FF | R00 | ACF07 | 220 |  | MEP |  |  |  |  | FF |  |  |  |  |  |  |  |  |  |
| T11P126003C0 |  | PT-11 ; Final Fix, Inst of Light fittings (PAT RM-1) | 48d | 2012-07-11 | 2012-09-06 | T11P109501C0 |  |  |  |  | 48.25d | 0d | ELECTRICAL [7815.6 h]; Cost |  |  | T11P126003C0 |  |  | PT | C | 11 | P1 | ME | 260 | 03 |  |  |  |  |  |  | BILL 10 | B10 | S2 | FF | R00 | ACF07 | 260 |  | MEP |  |  |  |  | FF |  |  |  |  |  |  |  |  |  |
| T11P106101C0 |  | PT-11 ; Wood / caseworks (PAT RM-1) | 54d | 2012-07-14 | 2012-09-17 | T10P106101C0 SS, T11CO04407C0, T11P109501C0, T11P109601C0, T11P109901C0, TAFWA00101M0 |  |  |  |  | 29.75d | 0d | WOOD WORK/CASEWORK [873.9 no]; WOOD WORK/CASEWORK [1915 h]; Cost |  |  | T11P106101C0 |  |  | PT | C | 11 | P1 | WO | 061 | 01 |  |  |  |  |  |  | BILL 10 | B10 | S2 | WW | R00 | ACF06 | 061 |  |  |  |  |  |  |  |  |  |  |  |  | 332 | 960 |  |  |
| T11P106102C0 |  | PT-11 ; Head/Foot Wall (PAT RM-1) | 54d | 2012-07-14 | 2012-09-17 | T11CO04407C0, T11P109501C0, TAFWA00101M0, T11P106101C0 SS |  |  |  |  | 61.5d | 0d | WOOD WORK/CASEWORK [1649 h]; Cost |  |  | T11P106102C0 |  |  | PT | C | 11 | P1 | WO | 061 | 02 |  |  |  |  |  |  | BILL 10 | B10 | S2 | WW | R00 | ACF06 | 061 |  |  |  |  |  |  |  |  |  |  |  |  | 332 | 960 |  |  |
| T11P121113C0 |  | PT-11 ; Final Fix, Inst of Sprinklers head/ Extinguisher (PAT RM-1) | 36d | 2012-07-18 | 2012-08-30 | T11P109501C0, T11P121115C0 |  |  |  |  | 54.25d | 6d | MECHANICAL [234 h]; Cost |  |  | T11P121113C0 |  |  | PT | C | 11 | P1 | ME | 211 | 13 |  |  |  |  |  |  | BILL 10 | B10 | S2 | FF | R00 | ACF07 | 211 |  | MEP |  |  |  |  | FF |  |  |  |  |  |  |  |  |  |
| T11P123019C0 |  | PT-11 ; Final Fix, Inst of Grilles & Diffusers (PAT RM-1) | 36d | 2012-07-18 | 2012-08-30 | T11P109501C0, T11P123021C0 |  |  |  |  | 54.25d | 6d | MECHANICAL [1498.8 h]; Cost |  |  | T11P123019C0 |  |  | PT | C | 11 | P1 | ME | 230 | 19 |  |  |  |  |  |  | BILL 10 | B10 | S2 | FF | R00 | ACF07 | 230 |  | MEP |  |  |  |  | FF |  |  |  |  |  |  |  |  |  |
| T11P127030C0 |  | PT-11 ; Final Fix, Inst of ELV device (Detector/Speaker) (PAT RM-1) | 42d | 2012-07-18 | 2012-09-06 | T11P109501C0, T11P127002C0 |  |  |  |  | 48.25d | 0d | ELECTRICAL [3571.2 h]; Cost |  |  | T11P127030C0 |  |  | PT | C | 11 | P1 | ME | 270 | 30 |  |  |  |  |  |  | BILL 10 | B10 | S2 | FF | R00 | ACF07 | 270 |  | MEP |  |  |  |  | FF |  |  |  |  |  |  |  |  |  |
| T11P108709C0 |  | PT-11 ; Ironmongery (PAT RM-1) | 29.12d | 2012-08-15 | 2012-09-20 | T11P108107C0 |  |  |  |  | 88.88d | 43.12d | IRONMONGERY [870 h]; IRONMONGERY [87 no]; Cost |  |  | T11P108709C0 |  |  | PT | C | 11 | P1 | DO | 087 | 09 |  |  |  |  |  |  | BILL 10 | B10 | S2 | IM | R00 | ACF06 | 087 |  |  |  |  |  |  |  |  |  |  |  |  | 322 | 951 | 08 |  |
| T11P109701C0 |  | PT-11 ; Wall finishes (ST, WD, WC) (PAT RM-1) | 36d | 2012-08-15 | 2012-09-27 | T11P126011C0, T11P127020C0, T11P109501C0, T11P109601C0, T11P109305C0 |  |  |  |  | 58d | 0d | ASSORTED WALL FINISH [519 h]; ASSORTED WALL FINISH [595 m2]; Cost |  |  | T11P109701C0 |  |  | PT | C | 11 | P1 | WF | 097 | 01 |  |  |  |  |  |  | BILL 10 | B10 | S2 | 01 | R00 | ACF06 | 097 |  |  |  |  |  |  |  |  |  |  |  |  | 105 | 1002 |  |  |
| T11P101006C0 |  | PT-11 ; 2nd, Ceiling Inspection by Consultants (PAT RM-1) | 6d | 2012-09-08 | 2012-09-13 | T11P121115C0, T11P123009C0, T11P123015C0, T11P127002C0, T11P109501C0, T11P121113C0, T11P123019C0, T11P126017C0, T11P126003C0, T11P127030C0 |  |  |  |  | 48.25d | 2.5d | Labor General [1.2 h]; Cost |  |  | T11P101006C0 |  |  | PT | C | 11 | P1 | ME | 010 | 06 |  |  |  |  |  |  | BILL 10 | B10 | S2 | CI | R00 | ACF07 | 010 |  | MEP |  |  |  |  | 2n |  |  |  |  |  |  |  |  |  |
| T11P109503C0 |  | PT-11 ; Ceiling closure - ACT/Gypsum (PAT RM-1) | 15.75d | 2012-09-17 | 2012-10-06 | T11P101006C0, T11P109510C0, T11P121115C0, T11P126005C0, T11P127001C0, T11P127002C0, TAFOA09513C1 FF, T11P106101C0, T11P123021C0 |  |  |  |  | 45.75d | 0d | ASSORTED CEILING FINISH [549.81 h]; CEILING GYPSUM [136.74 h]; ASSORTED CEILING FINISH [894 m2]; CEILING GYPSUM [417 m2]; Cost |  |  | T11P109503C0 |  |  | PT | C | 11 | P1 | CE | 095 | 03 |  |  |  |  |  |  | BILL 10 | B10 | S2 | 02 | R00 | ACF06 | 095 |  |  |  |  |  |  |  |  |  |  |  |  | 324 | 953 |  |  |

| ID | WBS | Activity | Duration | Start | Finish | Predecessors | Complete | Remaining | Planned start | Planned finish | Total float | Free float | Expected finish | Resources | Cost | Actual cost | Change Order # | NEW ACTIVITY ID | change id | CCAD BUILDING(SET) | CCAD PHASE(SET) | CCAD FLOOR(SET) | CCAD ZONE(SET) | CCAD WORK(SET) | CCAD SECTION(SET) | CCAD SERIAL No.(SET) | CCAD CBS(SET) | CCAD BILL(SET) | CCAD HANDOVER(SET) | CCAD TAG(SET) | CCAD REV(SET) | CCADACF (SET) | CCAD SSCF | CCAD CSA | CCAD SUB ZONE MEP(SET) | P_811 | P_711 | Act Selector % | user_number8 | user_integer1 | user_integer2 | user_number7 | July2011 Target% Complete | Claimed This Month | U% | CCAD DIVISION(SET) | CCAD MEQ |
| --- | --- | --- | --- | --- | --- | --- | --- | --- | --- | --- | --- | --- | --- | --- | --- | --- | --- | --- | --- | --- | --- | --- | --- | --- | --- | --- | --- | --- | --- | --- | --- | --- | --- | --- | --- | --- | --- | --- | --- | --- | --- | --- | --- | --- | --- | --- | --- |
| T11P111001C0 |  | PT-11 ; Wall Protection (WP, CG, WG, FCG) (PAT RM-1) | 24d | 2012-09-29 | 2012-10-25 | T11P109701C0, T11P109903C0 SS |  |  |  |  | 58d | 12.25d |  | FF&E [27 h]; Cost |  |  | 326 | 1001 | T11P111001C0 | PT | C | 11 | P1 | WF | 110 | 01 | BILL 10 | B10 | S2 | 03 | R00 | ACF08 | b |  |  |  |  |  |  |  |  |  |  |  |  |  |  |
|  |  | 362.016667 | 0d | 2012-10-06 | 2012-12-24 A |  |  |  | 2012-12-02 | 2012-12-24 | 42.5d | 0d | 2012-10-29 |  |  |  |  |  |  |  |  |  |  |  |  |  |  |  |  |  |  |  |  |  |  |  |  |  |  |  |  |  |  |  |  |  |  |
| T11P109671C1 |  | PT-11, Carpet Tile Finish (Patient Room-1) | 0d | 2012-10-06 | 2012-10-06 | T11P109903C0 SS, T11P109907C0 SS |  |  |  |  | 75.75d | 30d |  | Cost |  |  |  |  |  | PT | C | 11 | P1 | FF | 096 |  |  | B10 |  |  | R00 | ACF06 | CPT | CPT |  |  |  |  |  |  |  |  |  |  |  |  |  |
| T11P109907C0 |  | PT-11 ; Ceiling Final paint (PAT RM-1) | 18d | 2012-10-06 | 2012-10-29 | T11P109601C0, T11P109905C0, T11P109503C0 |  |  |  |  | 57.75d | 0d |  | CEILING PAINT [20 h]; CEILING PAINT [23 m2]; Cost |  |  | 331 | 959 | T11P109907C0 | PT | C | 11 | P1 | PA | 099 | 07 | BILL 10 | B10 | S2 | 02 | R00 | ACF06 | 099 |  |  |  |  |  |  |  |  |  |  |  |  |  |  |
| T11P111003C0 |  | PT-11 ; FF & E (PAT RM-1) | 18d | 2012-10-06 | 2012-10-29 | T11P109601C0, T11P106101C0, T11P109503C0 |  |  |  |  | 57.75d | 12d |  | FF&E [1067 h]; Cost |  |  | 333 | 961 | T11P111003C0 | PT | C | 11 | P1 | WO | 110 | 03 | BILL 10 | B10 | S2 | 04 | R00 | ACF08 | a |  |  |  |  |  |  |  |  |  |  |  |  |  |  |
| T11P126019C0 |  | PT-11 ; Final Fix, Inst of Switch/Sockets (PAT RM-1) | 18d | 2012-10-06 | 2012-10-29 | T11P109901C0, T11P109503C0 |  |  |  |  | 45.75d | 0d |  | ELECTRICAL [362.4 h]; Cost |  |  |  |  | T11P126019C0 | PT | C | 11 | P1 | ME | 260 | 19 | BILL 10 | B10 | S2 | FF | R00 | ACF07 | 260 | MEP | FF |  |  |  |  |  |  |  |  |  |  |  |  |
| T-11 ; Final Fix, Medkc!l Gas pipe (TAT RM-1) |  |  | 0d |  | 2012-12-02 | T11P109501C0, T11P106102C0 | 8% |  | 2012-12-24 |  | 0d | 18d |  | PLUMBING [1149.6 h]; Cost |  |  |  |  | T11P122029C0 | PT | C | 11 | P1 | ME | 220 | 29 | BILL 10 | B10 | S2 | FF | R00 | ACF07 | 220 | MEP | FF |  |  |  |  |  |  |  |  |  |  |  |  |
| T11P122025C0 |  | PT-11 ; Final Fix, Inst of Sanitary Ware (PAT RM-1) | 42d |  | 2012-10-24 A | T11P109205C0, T11P109305C0 |  |  |  |  | 94d | 0d |  | PLUMBING [3690 h]; Cost |  |  |  |  | T11P122025C0 | PT | C | 11 | P1 | ME | 220 | 25 | BILL 10 | B10 | S2 | FF | R00 | ACF07 | 220 | MEP | FF |  |  |  |  |  |  |  |  |  |  |  |  |
|  | 10 | **Precommissioning Tesing & snagging (PAT RM-1)** |  | 2012-10-29 | 2012-12-13 |  |  |  |  |  |  |  |  |  |  |  |  |  |  |  |  |  |  |  |  |  |  |  |  |  |  |  |  |  |  |  |  |  |  |  |  |  |  |  |  |  |  |
| T11TS01801C0 |  | PT-11 ; MEP de-snag, FIREM sign-off | 12d | 2012-10-29 | 2012-11-12 | T11P122025C0, T11P126017C0, T11P121113C0, T11P123019C0, T11P140303C0, T11P122021C0, T-11 ; Final Fix, Medkc!l Gas pipe (TAT RM-1), T11P126003C0, T11P127030C0, T11P126019C0 |  |  |  |  | 45.75d | 0d |  | TESTING & COMMISSIONING [2040 h]; Cost |  |  |  |  | T11TS01801C0 | PT | C | 11 | TS | SC | 018 | 01 | BILL 10 | B10 | S2 | 01 | R00 | ACF07 | 018 |  |  |  |  |  |  |  |  |  |  |  |  |  |  |
| T11TS01806C0 |  | PT-11 ; Touch-up & Clean / JV inspection /CIR /De-snag | 18d | 2012-11-12 | 2012-12-05 | T11P106101C0, T11P106102C0, T11P108709C0, T11P109305C0, T11P109601C0, T11P109701C0, T11P109903C0, T11P109907C0, T11P111001C0, T11P111003C0, T11TS01801C0, T11P105501C0, T11P109503C0, T11P109671C1, T11P209681C1 |  |  |  |  | 45.75d | 0d |  | TESTING & COMMISSIONING [128 h]; Cost |  |  |  |  | T11TS01802C0 | PT | C | 11 | TS | SC | 018 | 02 | BILL 10 | B10 | S2 | 02 | R00 | ACF07 | 018 |  |  |  |  |  |  |  |  |  |  |  |  |  |  |
| T11TS01809C0 |  | PT-11 ; Consultant's final de-snag inspection | 7d | 2012-12-05 | 2012-12-13 | T11TS01806C0 |  |  |  |  | 45.75d | 0d |  | Labor General [1 h]; Cost |  |  |  |  | T11TS01803C0 | PT | C | 11 | TS | SC | 018 | 03 | BILL 10 | B10 | S2 | 03 | R00 | ACF07 | 018 |  |  |  |  |  |  |  |  |  |  |  |  |  |  |
|  | 03 | **PAT RM-2** |  | 2011-07-10 | 2013-01-27 |  |  |  |  |  |  |  |  |  |  |  |  |  |  |  |  |  |  |  |  |  |  |  |  |  |  |  |  |  |  |  |  |  |  |  |  |  |  |  |  |  |  |
| T11P209201C0 |  | PT-11 ; Metal Studs (PAT RM-2) | 60d | 2011-07-10 A | 2011-11-29 | T11P223001C0, T11CO04405C0 FF, T11CO04407C0 FF | 50% | 30d | 2011-09-05 | 2011-11-16 | 39.25d | 0d |  | PARTITIONS [2367 h]; PARTITIONS - Metal Studs [328 m]; Cost |  |  | 313 | 944 | T11P209201C0 | PT | C | 11 | P2 | PT | 092 | 01 | BILL 10 | B10 | S2 | 1F | R00 | ACF06 | 092 | GP |  | 50 | 30 | PMS |  |  |  |  |  |  |  |  |  |
| T11P223001C0 |  | PT-11 ; 1st Fix, Inst. of Supports for MEP (PAT RM-2) | 120d | 2011-07-11 A | 2011-10-20 | T11CO07807C0 | 85% | 18d | 2011-08-11 | 2012-01-07 | 39.25d | 0d |  | MECHANICAL [800.4 h]; Cost [45150.4 AED] | 45,150.38 | 38,377.83 |  |  | T11P223001C0 | PT | C | 11 | P2 | ME | 230 | 01 | BILL 10 | B10 | S2 | 1F | R00 | ACF04 | 230 | MEP | 1S | 85 | 10 | M1F | 0 | 0 | 0 | 0 | 25 | 2618.72 | 85 |  |  |
| T11P209203C0 |  | PT-11 ; Partitions 1st face (PAT RM-2) | 45d | 2011-08-10 A | 2012-01-10 | T11P209201C0 | 25% | 33.75d | 2011-12-08 | 2012-01-31 | 54.5d | 15.25d |  | PARTITIONS [328 m]; PARTITIONS [1854 h]; Cost |  |  | 314 | 945 | T11P209203C0 | PT | C | 11 | P2 | PT | 092 | 03 | BILL 10 | B10 | S2 | 2F | R00 | ACF06 | 092 | GP |  | 10 | 0 | P1F | 0 | 0 | 0 | 0 |  |  |  |  |  |
| T11P222005C0 |  | PT-11 ; 1st Fix, Inst of Water supply pipe (ceiling) (PAT RM-2) | 60d | 2011-09-05 A | 2012-01-02 | T11P222019C0 SS+10d, T11P223001C0 | 5% | 57d | 2011-11-23 | 2012-02-05 | 45.25d | 0d |  | PLUMBING [4548 h]; Cost [245665 AED] | 245,664.7 | 12,283.24 |  |  | T11P222005C0 | PT | C | 11 | P2 | ME | 220 | 05 | BILL 10 | B10 | S2 | 1F | R00 | ACF04 | 220 | MEP | 1S |  |  | M1F |  |  |  |  |  |  | 5 |  |  |
| T11P222019C0 |  | PT-11 ; 1st Fix, Inst of Drainage pipe (ceiling) (PAT RM-2) | 48d | 2011-09-05 A | 2011-12-05 | T11P223001C0, T11P226013C0 SS+14d | 30% | 33.6d | 2011-11-12 | 2012-01-09 | 45.25d | 0d |  | PLUMBING [1378.8 h]; Cost [74493.8 AED] | 74,493.83 | 22,348.15 |  |  | T11P222019C0 | PT | C | 11 | P2 | ME | 220 | 19 | BILL 10 | B10 | S2 | 1F | R00 | ACF04 | 220 | MEP | 1S |  |  | M1F |  |  |  |  |  |  | 10 |  |  |
| T11P223023C0 |  | PT-11 ; 1st Fix, Inst of Main Ducting (PAT RM-2) | 60d | 2011-09-05 A | 2012-01-31 | T11P223001C0, T11P223017C0 SS+10d | 10% | 54d | 2012-01-08 | 2012-03-18 | 71.25d | 0d |  | MECHANICAL [8022 h]; Cost [438125 AED] | 438,124.55 | 43,812.45 |  |  | T11P223023C0 | PT | C | 11 | P2 | ME | 230 | 23 | BILL 10 | B10 | S2 | 1F | R00 | ACF04 | 230 | MEP | 1S |  |  | M1F |  |  |  |  |  |  |  |  |  |
| T11P226001C0 |  | PT-11 ; 1st Fix, Inst of Trunking/Conduiting (PAT RM-2) | 48d | 2011-09-05 A | 2011-12-17 | T11CO07807C0, T11P223001C0 | 10% | 43.2d | 2011-09-22 | 2011-11-20 | 45.25d | 0d |  | ELECTRICAL [734.4 h]; Cost [37790.1 AED] | 37,790.1 | 3,779.01 |  |  | T11P226001C0 | PT | C | 11 | P2 | ME | 260 | 01 | BILL 10 | B10 | S2 | 1F | R00 | ACF04 | 260 | MEP | 1S |  |  | M1F |  |  |  |  | 25 | 2219.22 |  |  |  |
| T11P226009C0 |  | PT-11 ; 2nd Fix, Inst of Wall conduites (PAT RM-2) | 42d | 2011-09-05 A | 2012-01-15 | T11P209201C0 | 10% | 37.8d | 2011-10-10 | 2011-12-04 | 44.45d | 4.2d |  | ELECTRICAL [734.4 h]; Cost [37790.1 AED] | 37,790.1 | 3,779.01 |  |  | T11P226009C0 | PT | C | 11 | P2 | ME | 260 | 09 | BILL 10 | B10 | S2 | 2F | R00 | ACF07 | 260 | MEP | 2n |  |  |  |  |  |  |  | 25 | 2219.22 |  |  |  |
| T11P226013C0 |  | PT-11 ; 1st Fix, Inst of Cable Tray (PAT RM-2) | 48d | 2011-09-05 A | 2011-12-17 | T11CO07807C0, T11P223001C0, T11P227010C0 SS+12d | 10% | 43.2d | 2011-10-23 | 2011-12-22 | 45.25d | 0d |  | ELECTRICAL [399.6 h]; Cost [21571.3 AED] | 21,571.27 | 2,157.13 |  |  | T11P226013C0 | PT | C | 11 | P2 | ME | 260 | 13 | BILL 10 | B10 | S2 | 1F | R00 | ACF04 | 260 | MEP | 1S |  |  | M1F |  |  |  |  |  |  |  |  |  |
| T11P227010C0 |  | PT-11 ; 1st Fix, Inst of Trunking for ELV system (PAT RM-2) | 48d | 2011-09-05 A | 2011-12-17 | T11CO07807C0, T11P223001C0, T11P226001C0 SS+14d | 10% | 43.2d | 2011-10-09 | 2011-12-08 | 45.25d | 0d |  | ELECTRICAL [1512 h]; Cost [79240.1 AED] | 79,240.08 | 7,924.01 |  |  | T11P227010C0 | PT | C | 11 | P2 | ME | 270 | 10 | BILL 10 | B10 | S2 | 1F | R00 | ACF04 | 270 | MEP | 1S |  |  | M1F |  |  |  |  |  |  |  |  |  |
| T11P221111C0 |  | PT-11 ; 1st Fix, Inst of Sprinkler main pipe (PAT RM-2) | 48d | 2011-10-22 | 2011-12-21 | T11P222005C0 SS+14d, T11P223001C0 |  |  |  |  | 45.25d | 0d |  | MECHANICAL [853.2 h]; Cost |  |  |  |  | T11P221111C0 | PT | C | 11 | P2 | ME | 211 | 11 | BILL 10 | B10 | S2 | 1F | R00 | ACF04 | 211 | MEP | 1S |  |  | M1F |  |  |  |  |  |  |  |  |  |
| T11P222007C0 |  | PT-11 ; 1st Fix, Inst of Medical Gas pipe (PAT RM-2) | 48d | 2011-11-10 | 2012-01-08 | T11P221111C0 SS+14d, T11P223001C0 |  |  |  |  | 56.25d | 16d |  | PLUMBING [1149.6 h]; Cost |  |  |  |  | T11P222007C0 | PT | C | 11 | P2 | ME | 220 | 07 | BILL 10 | B10 | S2 | 1F | R00 | ACF04 | 220 | MEP | 1S |  |  | M1F |  |  |  |  |  |  |  |  |  |
| T11P223017C0 |  | PT-11 ; 1st Fix, Inst of CHW pipe (PAT RM-2) | 54d | 2011-11-15 | 2012-01-19 | T11P221111C0 SS+12d, T11P223001C0, T11P205503C0 FF+18d |  |  |  |  | 39.25d | 0d |  | MECHANICAL [2467.2 h]; Cost |  |  |  |  | T11P223017C0 | PT | C | 11 | P2 | ME | 230 | 17 | BILL 10 | B10 | S2 | 1F | R00 | ACF04 | 230 | MEP | 1S |  |  | M1F |  |  |  |  |  |  |  |  |  |
| T11P205503C0 |  | PT-11 ; Ceiling Support for medical equipment (PAT RM-2) | 24d | 2011-11-30 | 2011-12-28 | T11P209201C0, TAFCI22011R20 FS+58d |  |  |  |  | 39.25d | 0d |  | SECONDARY STEEL [72 h]; STRUCTURAL STEEL [29 T(Fe)]; Cost |  |  | 335 | 962 | D03EY05503C0 | PT | C | 11 | P2 | SW | 055 | 03 | BILL 10 | B10 | S2 | 03 | R00 | ACF03 | b |  |  |  |  |  |  |  |  |  |  |  |  |  |  |
| T11P222011C0 |  | PT-11 ; 2nd Fix, Drainage/Water pipe (wall) (PAT RM-2) | 42d | 2011-11-30 | 2012-01-19 | T11P209201C0 |  |  |  |  | 40.25d | 0d |  | PLUMBING [1378.8 h]; Cost |  |  |  |  | T11P222011C0 | PT | C | 11 | P2 | ME | 220 | 11 | BILL 10 | B10 | S2 | 2F | R00 | ACF07 | 220 | MEP | 2n |  |  |  |  |  |  |  |  |  |  |  |  |
| T11P222015C0 |  | PT-11 ; 2nd Fix, Medical Gas pipe (PAT RM-2) | 42d | 2011-11-30 | 2012-01-19 | T11P209201C0, T11P222007C0 SS |  |  |  |  | 40.25d | 0d |  | PLUMBING [1149.6 h]; Cost |  |  |  |  | T11P222015C0 | PT | C | 11 | P2 | ME | 220 | 15 | BILL 10 | B10 | S2 | 2F | R00 | ACF07 | 220 | MEP | 2n |  |  |  |  |  |  |  |  |  |  |  |  |
| T11P209702C0 |  | PT-11 ; Installation of Bathroom Pods (PAT RM-2) | 0d | 2011-12-11 | 2011-12-11 | T11P109702C0 SS, T11CO07807C0, AAFCI09201R02 FS+118d |  |  |  |  | 132.25d | 0d |  | Cost |  |  | 105 | 1002 | T10P109701C0 | PT | C | 11 | P2 | BP | 097 | 01 | BILL 10 | B10 | S2 | FG | R00 | ACF06 | 097 |  |  |  |  |  |  |  |  |  |  |  |  |  |  |
| T11P227001C0 |  | PT-11 ; 1st Fix, Wiring/ Cabling work (PAT RM-2) | 48d | 2011-12-17 | 2012-02-13 | T11P226001C0, T11P226013C0, T11P227010C0 |  |  |  |  | 110.05d | 70.8d |  | ELECTRICAL [392.4 h]; Cost |  |  |  |  | T11P227001C0 | PT | C | 11 | P2 | ME | 270 | 01 | BILL 10 | B10 | S2 | 1F | R00 | ACF04 | 270 | MEP | 1S |  |  | M1F |  |  |  |  |  |  |  |  |  |
| T11P221117C0 |  | PT-11 ; 1st Fix, Inst of Sprinkler branch pipe (PAT RM-2) | 48d | 2011-12-22 | 2012-02-18 | T11P209201C0, T11P221111C0, T11P205503C0 FF+18d |  |  |  |  | 105.25d | 66d |  | MECHANICAL [561.6 h]; Cost |  |  |  |  | T11P221117C0 | PT | C | 11 | P2 | ME | 211 | 17 | BILL 10 | B10 | S2 | 1F | R00 | ACF04 | 211 | MEP | 1S |  |  | M1F |  |  |  |  |  |  |  |  |  |
| T11P208103C0 |  | PT-11 ; Door Frames (PAT RM-2) | 36d | 2011-12-28 | 2012-02-09 | T11P209201C0, GNHE08101C0 FS+126d |  |  |  |  | 73.25d | 34d |  | ASSORTED DOORS [215 h]; Cost |  |  | 316 | 947 | T11P208103C0 | PT | C | 11 | P2 | DO | 081 | 03 | BILL 10 | B10 | S2 | DF | R00 | ACF06 | 081 |  |  |  |  |  |  |  |  |  |  |  |  | 08 |  |
| T11P205511C0 |  | PT-11 ; Wall reinforcement for MEP/Medical (PAT RM-2) | 24d | 2011-12-31 | 2012-01-28 | T11P209201C0, TAFCI22011R02 FS+58d |  |  |  |  | 39.25d | 0d |  | SECONDARY STEEL [31 h]; Cost |  |  |  |  | T11P205511C0 | PT | C | 11 | P2 | SW | 055 | 11 | BILL 10 | B10 | S2 | 03 | R00 | ACF03 | b |  |  |  |  |  |  |  |  |  |  |  |  |  |  |
| T11P201005C0 |  | PT-11 ; 2nd, Wall Inspection by Consultant (PAT RM-2) | 6d | 2012-01-21 | 2012-01-26 | T11P222011C0, T11P222015C0, T11P226009C0 |  |  |  |  | 40.25d | 1d |  | Labor General [1.2 h]; Cost |  |  |  |  | T11P201005C0 | PT | C | 11 | P2 | ME | 010 | 05 | BILL 10 | B10 | S2 | WI | R00 | ACF07 | 010 | MEP | 2n |  |  |  |  |  |  |  |  |  |  |  |  |
| T11P223009C0 |  | PT-11 ; 2nd Fix, Inst of VAV'S CHW connection (PAT RM-2) | 42d | 2012-01-21 | 2012-03-10 | T11P223017C0 |  |  |  |  | 39.25d | 0d |  | MECHANICAL [1450.8 h]; Cost |  |  |  |  | T11P223009C0 | PT | C | 11 | P2 | ME | 230 | 09 | BILL 10 | B10 | S2 | 2F | R00 | ACF07 | 230 | MEP | 2n |  |  |  |  |  |  |  |  |  |  |  |  |
| T11P209205C0 |  | PT-11 ; Partitions Closing (PAT RM-2) | 44d | 2012-01-29 | 2012-03-20 | T11P201005C0, T11P205511C0, T11P209203C0, T11P222005C0, T11P222019C0, TAFOA09214C1 FF, T11P208103C0 FF |  |  |  |  | 39.25d | 0d |  | PARTITIONS [328 m]; PARTITIONS [2369 h]; Cost |  |  | 315 | 946 | T11P209205C0 | PT | C | 11 | P2 | PT | 092 | 05 | BILL 10 | B10 | S2 | FF | R00 | ACF06 | 092 | GP |  |  |  | P2F |  |  |  |  |  |  |  |  |  |
| T11P223008C0 |  | PT-11 ; 1st Fix, Inst of VCD's/FD's (PAT RM-2) | 48d | 2012-02-01 | 2012-03-28 | T11P223023C0, T11P205503C0 FF+18d |  |  |  |  | 71.25d | 32d |  | MECHANICAL [1753.2 h]; Cost |  |  |  |  | T11P223008C0 | PT | C | 11 | P2 | ME | 230 | 08 | BILL 10 | B10 | S2 | 1F | R00 | ACF04 | 230 | MEP | 1S |  |  | M1F |  |  |  |  |  |  |  |  |  |
| T11P223015C0 |  | PT-11 ; 2nd Fix, Insulation of CHW pipe & Duct (PAT RM-2) | 48d | 2012-03-11 | 2012-05-05 | T11P223009C0, T11P223017C0, T11P223023C0 |  |  |  |  | 39.25d | 0d |  | MECHANICAL [3064.8 h]; Cost |  |  |  |  | T11P223015C0 | PT | C | 11 | P2 | ME | 230 | 15 | BILL 10 | B10 | S2 | 2F | R00 | ACF07 | 230 | MEP | 2n |  |  |  |  |  |  |  |  |  |  |  |  |
| T11P207103C0 |  | PT-11 ; Waterproofing (PAT RM-2) | 12d | 2012-03-21 | 2012-04-03 | T11P208103C0, T11P209205C0 |  |  |  |  | 120.25d | 81d |  | THERMAL & MOISTURE [384 h]; THERMAL & MOISTURE [2509 m2]; Cost |  |  | 105 | 999 | T11P207103C0 | PT | C | 11 | P2 | FF | 071 | 03 | BILL 10 | B10 | S2 | 01 | R00 | ACF03 | 071 |  |  |  |  |  |  |  |  |  |  |  |  |  |  |
| T11P209901C0 |  | PT-11 ; Wall Prime & 1st coat (PAT RM-2) | 30d | 2012-03-21 | 2012-04-24 | T11P209205C0 |  |  |  |  | 39.25d | 0d |  | WALL PAINT [415 h]; WALL PAINT [517 m2]; Cost |  |  | 328 | 956 | T11P209901C0 | PT | C | 11 | P2 | PA | 099 | 01 | BILL 10 | B10 | S2 | 01 | R00 | ACF06 | 099 |  |  |  |  |  |  |  |  |  |  |  |  |  |  |
| T11P226005C0 |  | PT-11 ; 2nd Fix, Wiring for Power/Lighting/Emergency (PAT RM-2) | 42d | 2012-03-21 | 2012-05-08 | T11P209205C0 |  |  |  |  | 123.25d | 0d |  | ELECTRICAL [392.4 h]; Cost |  |  |  |  | T11P226005C0 | PT | C | 11 | P2 | ME | 260 | 05 | BILL 10 | B10 | S2 | 2F | R00 | ACF07 | 260 | MEP | 2n |  |  |  |  |  |  |  |  |  |  |  |  |
| T11P226007C0 |  | PT-11 ; 2nd Fix, Cable Pulling (PAT RM-2) | 48d | 2012-03-21 | 2012-05-15 | T11P209201C0 SS+6d, T11P209205C0 |  |  |  |  | 159.25d | 107.5d |  | ELECTRICAL [2683.2 h]; Cost |  |  |  |  | T11P226007C0 | PT | C | 11 | P2 | ME | 260 | 07 | BILL 10 | B10 | S2 | 2F | R00 | ACF07 | 260 | MEP | 2n |  |  |  |  |  |  |  |  |  |  |  |  |
| T11P226011C0 |  | PT-11 ; 2nd Fix, Inst of Equipment (DB) (PAT RM-2) | 54d | 2012-03-21 | 2012-05-22 | T11P209205C0 |  |  |  |  | 143d | 75d |  | ELECTRICAL [878.4 h]; Cost |  |  |  |  | T11P226011C0 | PT | C | 11 | P2 | ME | 260 | 11 | BILL 10 | B10 | S2 | 2F | R00 | ACF04 | 260 | MEP | 2n |  |  |  |  |  |  |  |  |  |  |  | E |
| T11P226053C0 |  | PT-11 ; 2nd Fix, Wiring / Cabling (PAT RM-2) | 42d | 2012-03-21 | 2012-05-08 | T11P209203C0, T11P209205C0 |  |  |  |  | 60.25d | 21d |  | ELECTRICAL [392.4 h]; Cost |  |  | 389 | 977 | T11P226053C0 | PT | C | 11 | P2 | ME | 260 | 53 | BILL 10 | B10 | S2 | 2F | R00 | ACF07 | 260 | MEP | 2n |  |  |  |  |  |  |  |  |  |  |  |  |
| T11P205501C0 |  | PT-11 ; Handrails & balustrade (PAT RM-2) | 33d | 2012-04-25 | 2012-06-02 | T11P209901C0 |  |  |  |  | 39.25d | 0d |  | SECONDARY STEEL [174 h]; Cost |  |  |  |  | T11P205501C0 | PT | C | 11 | P2 | SW | 055 | 01 | BILL 10 | B10 | S2 | 01 | R00 | ACF03 | a |  |  |  |  |  |  |  |  |  |  |  |  |  |  |
| T11P209501C0 |  | PT-11 ; Ceiling Grid and Service Tile (PAT RM-2) | 24d | 2012-05-06 | 2012-06-02 | T11P205503C0, T11P209205C0 SS+15d, T11P221117C0, T11P223008C0, T11P223009C0, T11P223015C0, T11P227001C0, T11P226053C0 FF, T11P209901C0 |  |  |  |  | 39.25d | 0d |  | CEILING GRID FOR GYPSUM [3691.46 h]; CEILING GRID FOR GYPSUM [315.76 m2]; Cost |  |  | 323 | 952 | T11P209501C0 | PT | C | 11 | P2 | CE | 095 | 01 | BILL 10 | B10 | S2 | 01 | R00 | ACF06 | 095 |  |  |  |  |  |  |  |  |  |  |  |  |  |  |
| T11P209510C0 |  | PT-11 ; Patient Lift Ceiling Rail (by others) (PAT RM-2) | 30d | 2012-05-06 | 2012-06-09 | T11P209501C0 SS |  |  |  |  | 138.25d | 86.5d |  | Labor General [0.2 h]; Cost |  |  | 323 | 952 | I06P109501C0 | PT | C | 11 | P2 | CE | 095 | 10 | BILL 10 | B10 | S2 | 02 | R00 | ACF06 | 095 |  |  |  |  |  |  |  |  |  |  |  |  |  |  |
| T11P226015C0 |  | PT-11 ; Final Fix, Termination & Gladding of Cables (PAT RM-2) | 36d | 2012-05-09 | 2012-06-20 | T11P226005C0 |  |  |  |  | 123.25d | 69d |  | ELECTRICAL [148.8 h]; Cost |  |  |  |  | T11P226015C0 | PT | C | 11 | P2 | ME | 260 | 15 | BILL 10 | B10 | S2 | FF | R00 | ACF07 | 260 | MEP | FF |  |  |  |  |  |  |  |  |  |  |  |  |
| T11P209305C0 |  | PT-11 ; Flooring (Terrazzo) (PAT RM-2) | 30d | 2012-06-03 | 2012-07-08 | T11P209501C0 |  |  |  |  | 104d | 0d |  | TERRAZO FLOOR [1073 m2]; TERRAZO FLOOR [1936 h]; Cost |  |  | 106 | 1000 | T11P209305C0 | PT | C | 11 | P2 | FF | 096 | 05 | BILL 10 | B10 | S2 | 07 | R00 | ACF06 | TZ |  |  |  |  |  |  |  |  |  |  |  |  |  |  |
| T11P209601C0 |  | PT-11 ; Flooring (Rubber & etc) (PAT RM-2) | 30d | 2012-06-03 | 2012-07-08 | T11P209501C0, T11P207103C0 FF, T11P205501C0 |  |  |  |  | 39.25d | 0d |  | RUBBER FLOOR [24 h]; RUBBER FLOOR [55 m2]; Cost |  |  | 326 | 955 | T11P209601C0 | PT | C | 11 | P2 | FF | 096 | 01 | BILL 10 | B10 | S2 | 03 | R00 | ACF06 | RF |  |  |  |  |  |  |  |  |  |  |  |  |  |  |
| T11P209905C0 |  | PT-11 ; Ceiling Prime & 1st coat (PAT RM-2) | 30d | 2012-06-03 | 2012-07-08 | T11P209501C0 |  |  |  |  | 134d | 0d |  | CEILING PAINT [28 h]; CEILING PAINT [33 m2]; Cost |  |  | 330 | 958 | T11P209905C0 | PT | C | 11 | P2 | PA | 099 | 05 | BILL 10 | B10 | S2 | 01 | R00 | ACF06 | 099 |  |  |  |  |  |  |  |  |  |  |  |  |  |  |
| T11P221115C0 |  | PT-11 ; 2nd Fix, Inst of Sprinkler droppers (PAT RM-2) | 42d | 2012-06-03 | 2012-07-22 | T11P209501C0 |  |  |  |  | 60.25d | 0d |  | MECHANICAL [1602 h]; Cost |  |  |  |  | T11P221115C0 | PT | C | 11 | P2 | ME | 211 | 15 | BILL 10 | B10 | S2 | 2F | R00 | ACF07 | 211 | MEP | 2n |  |  |  |  |  |  |  |  |  |  |  |  |
| T11P223021C0 |  | PT-11 ; 2nd Fix, Inst of Flexible Duct & Plenum boxes (PAT RM-2) | 42d | 2012-06-03 | 2012-07-22 | T11P209205C0, T11P209501C0 |  |  |  |  | 60.25d | 0d |  | MECHANICAL [30 h]; Cost |  |  |  |  | T11P223021C0 | PT | C | 11 | P2 | ME | 230 | 21 | BILL 10 | B10 | S2 | 2F | R00 | ACF07 | 230 | MEP | 2n |  |  |  |  |  |  |  |  |  |  |  |  |
| T11P226017C0 |  | PT-11 ; Final Fix, Inst of Ceiling rose (PAT RM-2) | 36d | 2012-06-03 | 2012-07-15 | T11P209501C0 |  |  |  |  | 54.25d | 0d |  | ELECTRICAL [61.2 h]; Cost |  |  |  |  | T11P226017C0 | PT | C | 11 | P2 | ME | 260 | 17 | BILL 10 | B10 | S2 | FF | R00 | ACF07 | 260 | MEP | FF |  |  |  |  |  |  |  |  |  |  |  |  |
| T11P227002C0 |  | PT-11 ; 2nd Fix, Wiring Droppers (PAT RM-2) | 42d | 2012-06-03 | 2012-07-22 | T11P209501C0 |  |  |  |  | 54.25d | 0d |  | ELECTRICAL [392.4 h]; Cost |  |  |  |  | T11P227002C0 | PT | C | 11 | P2 | ME | 270 | 02 | BILL 10 | B10 | S2 | 2F | R00 | ACF07 | 270 | MEP | 2n |  |  |  |  |  |  |  |  |  |  |  |  |
| T11P227020C0 |  | PT-11 ; 2nd Fix, Inst of ELV Equipment (Panels) (PAT RM-2) | 66d | 2012-06-03 | 2012-08-21 | T11P209205C0, T11P209501C0 |  |  |  |  | 68d | 0d |  | ELECTRICAL [1819.2 h]; Cost |  |  |  |  | T11P227020C0 | PT | C | 11 | P2 | ME | 270 | 20 | BILL 10 | B10 | S2 | 2F | R00 | ACF04 | 270 | MEP | 2n |  |  |  |  |  |  |  |  |  |  |  | E |
| T11P240303C0 |  | PT-11 ; Final Fix, Pneumatic Station (PAT RM-2) | 36d | 2012-06-03 | 2012-07-15 | T11P209501C0 |  |  |  |  | 146d | 94.25d |  | MECHANICAL [2974.8 h]; Cost |  |  |  |  | T11P240303C0 | PT | C | 11 | P2 | ME | 403 | 03 | BILL 10 | B10 | S2 | FF | R00 | ACF07 | 403 | MEP | FF |  |  |  |  |  |  |  |  |  |  |  |  |
| T11P208107C0 |  | PT-11 ; Doors (PAT RM-2) | 36d | 2012-07-09 | 2012-08-21 | T11P208103C0, T11P209501C0, T11P209601C0, T11P209901C0 |  |  |  |  | 101.5d | 0d |  | ASSORTED DOORS [430 h]; ASSORTED DOORS [43 no]; Cost |  |  | 317 | 948 | T11P208107C0 | PT | C | 11 | P2 | DO | 081 | 07 | BILL 10 | B10 | S2 | DR | R00 | ACF06 | 081 |  |  |  |  |  |  |  |  |  |  |  |  | 08 |  |
| T11P209903C0 |  | PT-11 ; Wall Final Paint (PAT RM-2) | 30d | 2012-07-09 | 2012-08-12 | T11P209901C0, T11P209905C0, T11P209501C0 |  |  |  |  | 134d | 72d |  | WALL PAINT [225 h]; WALL PAINT [279 m2]; Cost |  |  | 329 | 957 | T11P209903C0 | PT | C | 11 | P2 | PA | 099 | 03 | BILL 10 | B10 | S2 | 02 | R00 | ACF06 | 099 |  |  |  |  |  |  |  |  |  |  |  |  |  |  |
| T11P222025C0 |  | PT-11 ; Final Fix, Inst of Sanitary Ware (PAT RM-2) | 42d | 2012-07-09 | 2012-08-28 | T11P209205C0, T11P209305C0 |  |  |  |  | 104d | 0d |  | PLUMBING [3361.2 h]; Cost |  |  |  |  | T11P222025C0 | PT | C | 11 | P2 | ME | 220 | 25 | BILL 10 | B10 | S2 | FF | R00 | ACF07 | 220 | MEP | FF |  |  |  |  |  |  |  |  |  |  |  |  |
| T11P222021C0 |  | PT-11 ; Final Fix, Terminate Sanitary Ware & Appliances (PAT RM-2) | 42d | 2012-07-16 | 2012-09-04 | T11P222011C0, T11P222025C0 SS+6d |  |  |  |  | 104d | 52.25d |  | PLUMBING [3361.2 h]; Cost |  |  |  |  | T11P222021C0 | PT | C | 11 | P2 | ME | 220 | 21 | BILL 10 | B10 | S2 | FF | R00 | ACF07 | 220 | MEP | FF |  |  |  |  |  |  |  |  |  |  |  |  |
| T11P226003C0 |  | PT-11 ; Final Fix, Inst of Light fittings (PAT RM-2) | 48d | 2012-07-16 | 2012-09-11 | T11P209501C0, T11P226017C0 |  |  |  |  | 54.25d | 0d |  | ELECTRICAL [7815.6 h]; Cost |  |  |  |  | T11P226003C0 | PT | C | 11 | P2 | ME | 260 | 03 | BILL 10 | B10 | S2 | FF | R00 | ACF07 | 260 | MEP | FF |  |  |  |  |  |  |  |  |  |  |  |  |
| T11P221113C0 |  | PT-11 ; Final Fix, Inst of Sprinklers head/ Extinguisher (PAT RM-2) | 36d | 2012-07-23 | 2012-09-04 | T11P209501C0, T11P221115C0 |  |  |  |  | 60.25d | 6d |  | MECHANICAL [234 h]; Cost |  |  |  |  | T11P221113C0 | PT | C | 11 | P2 | ME | 211 | 13 | BILL 10 | B10 | S2 | FF | R00 | ACF07 | 211 | MEP | FF |  |  |  |  |  |  |  |  |  |  |  |  |
| T11P223019C0 |  | PT-11 ; Final Fix, Inst of Grilles & Diffusers (PAT RM-2) | 36d | 2012-07-23 | 2012-09-04 | T11P209501C0, T11P223021C0 |  |  |  |  | 60.25d | 6d |  | MECHANICAL [1498.8 h]; Cost |  |  |  |  | T11P223019C0 | PT | C | 11 | P2 | ME | 230 | 19 | BILL 10 | B10 | S2 | FF | R00 | ACF07 | 230 | MEP | FF |  |  |  |  |  |  |  |  |  |  |  |  |
| T11P227030C0 |  | PT-11 ; Final Fix, Inst of ELV device (Detector/Speaker) (PAT RM-2) | 42d | 2012-07-23 | 2012-09-11 | T11P209501C0, T11P227002C0 |  |  |  |  | 54.25d | 0d |  | ELECTRICAL [3571.2 h]; Cost |  |  |  |  | T11P227030C0 | PT | C | 11 | P2 | ME | 270 | 30 | BILL 10 | B10 | S2 | FF | R00 | ACF07 | 270 | MEP | FF |  |  |  |  |  |  |  |  |  |  |  |  |
| T11P206101C0 |  | PT-11 ; Wood / caseworks (PAT RM-2) | 48d | 2012-07-25 | 2012-09-22 | T10P206101C0 SS+5d, T11CO04407C0, T11P106101C0 SS+5d, T11P209501C0, T11P209601C0, T11P209901C0, TAFWA00101M0 |  |  |  |  | 24.75d | 0d |  | WOOD WORK/CASEWORK [659.26 no]; WOOD WORK/CASEWORK [1445 h]; Cost |  |  | 332 | 960 | T11P206101C0 | PT | C | 11 | P2 | WO | 061 | 01 | BILL 10 | B10 | S2 | WW | R00 | ACF06 | 061 |  |  |  |  |  |  |  |  |  |  |  |  |  |  |
| T11P206102C0 |  | PT-11 ; Head/Foot Wall (PAT RM-2) | 54d | 2012-07-25 | 2012-09-29 | T11CO04407C0, T11P209501C0, TAFWA00101M0, T11P206101C0 SS |  |  |  |  | 65.5d | 0d |  | WOOD WORK/CASEWORK [1649 h]; Cost |  |  | 332 | 960 | T11P206102C0 | PT | C | 11 | P2 | WO | 061 | 02 | BILL 10 | B10 | S2 | WW | R00 | ACF06 | 061 |  |  |  |  |  |  |  |  |  |  |  |  |  |  |
| T11P208709C0 |  | PT-11 ; Ironmongery (PAT RM-2) | 26.5d | 2012-08-22 | 2012-09-22 | T11P208107C0 |  |  |  |  | 101.5d | 49.75d |  | IRONMONGERY [610 h]; IRONMONGERY [61 no]; Cost |  |  | 322 | 951 | T11P208709C0 | PT | C | 11 | P2 | DO | 087 | 09 | BILL 10 | B10 | S2 | IM | R00 | ACF06 | 087 |  |  |  |  |  |  |  |  |  |  |  |  | 08 |  |
| T11P209701C0 |  | PT-11 ; Wall finishes (ST, WD, WC) (PAT RM-2) | 36d | 2012-08-22 | 2012-10-02 | T11P226011C0, T11P227020C0, T11P209501C0, T11P209601C0, T11P209305C0 |  |  |  |  | 68d | 0d |  | ASSORTED WALL FINISH [369 h]; ASSORTED WALL FINISH [423 m2]; Cost |  |  | 105 | 1002 | T11P209701C0 | PT | C | 11 | P2 | WF | 097 | 01 | BILL 10 | B10 | S2 | 01 | R00 | ACF06 | 097 |  |  |  |  |  |  |  |  |  |  |  |  |  |  |

| ID | WBS | Activity | Duration | Start | Finish | Predecessors | Complete | Remaining | Planned start | Planned finish | Total float | Free float | Resources | change id | CCAD BUILDING(SET) | CCAD PHASE(SET) | CCAD FLOOR(SET) | CCAD ZONE(SET) | CCAD WORK(SET) | CCAD SECTION(SET) | CCAD SERIAL No.(SET) | CCAD SUB ZONE MEP(SET) | CCAD CBS(SET) | CCAD BILL(SET) | CCAD HANDOVER(SET) | CCAD TAG(SET) | CCAD REV(SET) | CCADACF (SET) | CCAD CSA | CCAD SSCF | Change Order # | NEW ACTIVITY ID | P_811 | P_711 | U% | Act Selector % | CCAD DIVISION(SET) | CCAD MEQ | IDDD |
| --- | --- | --- | --- | --- | --- | --- | --- | --- | --- | --- | --- | --- | --- | --- | --- | --- | --- | --- | --- | --- | --- | --- | --- | --- | --- | --- | --- | --- | --- | --- | --- | --- | --- | --- | --- | --- | --- | --- | --- |
| T11P201006C0 |  | PT-11 ; 2nd, Ceiling Inspection by Consultants (PAT RM-2) | 6d | 2012-09-12 | 2012-09-18 | T11P221115C0, T11P223009C0, T11P223015C0, T11P227002C0, T11P209501C0, T11P221113C0, T11P223019C0, T11P226015C0, T11P226017C0, T11P226003C0, T11P227030C0 |  |  |  |  | 54.25d | 2.5d | Labor General [1.2 h]; Cost | T11P201006C0 | PT | C | 11 | P2 | ME | 010 | 06 | 2n | BILL 10 | B10 | S2 | CI | R00 | ACF07 | MEP | 010 |  |  |  |  |  |  |  |  |  |
| T11P209503C0 |  | PT-11 ; Ceiling closure - ACT/Gypsum (PAT RM-2) | 19.75d | 2012-09-22 | 2012-10-15 | T11P201006C0, T11P209510C0, T11P221115C0, T11P226005C0, T11P227001C0, T11P227002C0, TAFOA09513C1 FF, T11P206101C0, T11P223021C0, T11P226007C0 |  |  |  |  | 51.75d | 0d | ASSORTED CEILING FINISH [416.36 h]; CEILING GYPSUM [103.53 h]; ASSORTED CEILING FINISH [677 m2]; CEILING GYPSUM [316 m2]; Cost | T11P209503C0 | PT | C | 11 | P2 | CE | 095 | 03 |  | BILL 10 | B10 | S2 | 02 | R00 | ACF06 |  | 095 | 324 | 953 |  |  |  |  |  |  |  |
| T11P222029C0 |  | PT-11 ; Final Fix, Medical Gas pipe (PAT RM-2) | 18d | 2012-09-29 | 2012-10-20 | T11P209501C0, T11P206102C0 |  |  |  |  | 65.5d | 13.75d | PLUMBING [1149.6 h]; Cost | T11P222029C0 | PT | C | 11 | P2 | ME | 220 | 29 | FF | BILL 10 | B10 | S2 | FF | R00 | ACF07 | MEP | 220 |  |  |  |  |  |  |  |  |  |
| T11P211001C0 |  | PT-11 ; Wall Protection (WP, CG, WG, FCG) (PAT RM-2) | 24d | 2012-10-03 | 2012-11-01 | T11P209701C0, T11P209903C0 SS |  |  |  |  | 68d | 16.25d | FF&E [18 h]; Cost | T11P211001C0 | PT | C | 11 | P2 | WF | 110 | 01 |  | BILL 10 | B10 | S2 | 03 | R00 | ACF08 |  | b | 326 | 1001 |  |  |  |  |  |  |  |
| T11P209681C1 |  | PT-11, Carpet Tile Finish (Patient Room-2) | 0d | 2012-10-15 | 2012-10-15 | T11P209903C0 SS, T11P209907C0 SS |  |  |  |  | 67.75d | 22d | Cost |  | PT | C | 11 | P2 | FF | 096 |  |  |  | B10 |  |  | R00 | ACF06 | CPT | CPT |  |  |  |  |  |  |  |  |  |
| T11P209907C0 |  | PT-11 ; Ceiling Final paint (PAT RM-2) | 18d | 2012-10-15 | 2012-11-07 | T11P209601C0, T11P209905C0, T11P209503C0 |  |  |  |  | 63.75d | 0d | CEILING PAINT [15 h]; CEILING PAINT [18 m2]; Cost | T11P209907C0 | PT | C | 11 | P2 | PA | 099 | 07 |  | BILL 10 | B10 | S2 | 02 | R00 | ACF06 |  | 099 | 331 | 959 |  |  |  |  |  |  |  |
| T11P211003C0 |  | PT-11 ; FF & E (PAT RM-2) | 18d | 2012-10-15 | 2012-11-07 | T11P209601C0, T11P206101C0, T11P209503C0 |  |  |  |  | 63.75d | 12d | FF&E [715 h]; Cost | T11P211003C0 | PT | C | 11 | P2 | WO | 110 | 03 |  | BILL 10 | B10 | S2 | 04 | R00 | ACF08 |  | a | 333 | 961 |  |  |  |  |  |  |  |
| T11P222027C0 |  | PT-11 ; Final Fix, Inst of All drain (PAT RM-2) | 18d | 2012-10-15 | 2012-11-07 | T11P209305C0, T11P209503C0 |  |  |  |  | 51.75d | 0d | PLUMBING [1378.8 h]; Cost | T11P222027C0 | PT | C | 11 | P2 | ME | 220 | 27 | FF | BILL 10 | B10 | S2 | FF | R00 | ACF07 | MEP | 220 |  |  |  |  |  |  |  |  |  |
| T11P226019C0 |  | PT-11 ; Final Fix, Inst of Switch/Sockets (PAT RM-2) | 18d | 2012-10-15 | 2012-11-07 | T11P209901C0, T11P209503C0 |  |  |  |  | 51.75d | 0d | ELECTRICAL [362.4 h]; Cost | T11P226019C0 | PT | C | 11 | P2 | ME | 260 | 19 | FF | BILL 10 | B10 | S2 | FF | R00 | ACF07 | MEP | 260 |  |  |  |  |  |  |  |  |  |
|  | 10 | **Precommissioning Tesing & snagging (PAT RM-2)** |  | 2012-11-07 | 2013-01-27 |  |  |  |  |  |  |  |  |  |  |  |  |  |  |  |  |  |  |  |  |  |  |  |  |  |  |  |  |  |  |  |  |  |  |
| T11TS01804C0 |  | PT-11 ; MEP de-snag, FIREM sign-off | 12d | 2012-11-07 | 2012-11-22 | T11P222025C0, T11P222027C0, T11P226015C0, T11P222021C0, T11P221113C0, T11P223019C0, T11P240303C0, T11P222029C0, T11P226017C0, T11P226003C0, T11P227030C0, T11P226019C0 |  |  |  |  | 51.75d | 0d | TESTING & COMMISSIONING [510 h]; Cost | T11TS01801C0 | PT | C | 11 | TS | SC | 018 | 01 |  | BILL 10 | B10 | S2 | 01 | R00 | ACF07 |  | 018 |  |  |  |  |  |  |  |  |  |
| T11TS01807C0 |  | PT-11 ; Touch-up & Clean / JV inspection /CIR /De-snag | 18d | 2012-11-22 | 2012-12-15 | T11P206101C0, T11P206102C0, T11P208709C0, T11P209305C0, T11P209601C0, T11P209701C0, T11P209903C0, T11P209907C0, T11P211001C0, T11P211003C0, T11TS01804C0, T11P205501C0, T11P209503C0 |  |  |  |  | 51.75d | 28.65d | TESTING & COMMISSIONING [128 h]; Cost | T11TS01802C0 | PT | C | 11 | TS | SC | 018 | 02 |  | BILL 10 | B10 | S2 | 02 | R00 | ACF07 |  | 018 |  |  |  |  |  |  |  |  |  |
| T11TS01810C0 |  | PT-11 ; Consultant's final de-snag inspection | 7d | 2013-01-17 | 2013-01-27 | T11TS01807C0, T11TS01811C0, T10TS01810C0 |  |  |  |  | 23.1d | 0d | Labor General [1 h]; Cost | T11TS01803C0 | PT | C | 11 | TS | SC | 018 | 03 |  | BILL 10 | B10 | S2 | 03 | R00 | ACF07 |  | 018 |  |  |  |  |  |  |  |  |  |
|  | 05 | **TR Room** |  | 2011-07-10 | 2012-09-05 |  |  |  |  |  |  |  |  |  |  |  |  |  |  |  |  |  |  |  |  |  |  |  |  |  |  |  |  |  |  |  |  |  |  |
| T11TR09201C0 |  | PT-11 ; Metal Studs (TR RM) | 6d | 2011-07-10 A | 2011-10-22 | T11PA09201C0 SS | 90% | 0.6d | 2011-08-27 | 2011-09-04 | 42.4d | 0d | PARTITIONS [231 h]; PARTITIONS - Metal Studs [32 m]; Cost | T11TR09201C0 | PT | C | 11 | TR | PT | 092 | 01 |  | BILL 10 | B10 | S2 | 1F | R00 | ACF06 | GP | 092 | 313 | 885 | 50 | 30 | 90 | PMS |  |  |  |
| T11TR09203C0 |  | PT-11 ; Partitions 1st face (TR RM) | 24d | 2011-09-05 A | 2011-11-10 | T11TR09201C0 | 40% | 14.4d | 2011-10-18 | 2011-11-17 | 70d | 45d | PARTITIONS [32 m]; PARTITIONS [177 h]; Cost | T11TR09203C0 | PT | C | 11 | TR | PT | 092 | 03 |  | BILL 10 | B10 | S2 | 2F | R00 | ACF06 | GP | 092 | 314 | 886 |  |  | 40 | P1F |  |  |  |
| T11TR26026C0 |  | PT-11 ; 2nd Fix, Conduit (TR RM) | 30d | 2011-10-22 | 2011-11-30 | T11TR09201C0 |  |  |  |  | 42.4d | 0d | ELECTRICAL [734.4 h]; Cost | T11TR26026C0 | PT | C | 11 | TR | ME | 260 | 26 | 2n | BILL 10 | B10 | S2 | 2F | R00 | ACF07 | MEP | 260 |  |  |  |  |  |  |  |  |  |
| T11TR01005C0 |  | PT-11 ; 2nd, Wall Inspection by Consultant (TR RM) | 12d | 2011-11-30 | 2011-12-15 | T11TR26026C0 |  |  |  |  | 42.4d | 17.4d | Labor General [1.2 h]; Cost | T11TR01005C0 | PT | C | 11 | TR | ME | 010 | 05 | 2n | BILL 10 | B10 | S2 | WI | R00 | ACF07 | MEP | 010 |  |  |  |  |  |  |  |  |  |
| T11TR08101C0 |  | PT-11 ; Door Frames (TR RM) | 18d | 2011-12-28 | 2012-01-18 | T11TR09201C0, GNHE08101C0 FS+126d |  |  |  |  | 44d | 19d | ASSORTED DOORS [19 h]; Cost | T11TR08101C0 | PT | C | 11 | TR | DO | 081 | 01 |  | BILL 10 | B10 | S2 | DF | R00 | ACF06 |  | 081 | 316 | 20001090 |  |  |  |  | 08 |  |  |
| T11TR09205C0 |  | PT-11 ; Partitions Closing (TR RM) | 30d | 2012-01-07 | 2012-02-11 | T11TR01005C0, T11TR09201C0, T11TR09203C0, TAFOA09214C1 FF, T11TR08101C0 FF, T11PA09205C0 SS |  |  |  |  | 25d | 0d | PARTITIONS [32 m]; PARTITIONS [235 h]; Cost | T11TR09205C0 | PT | C | 11 | TR | PT | 092 | 05 |  | BILL 10 | B10 | S2 | FF | R00 | ACF06 | GP | 092 | 315 | 887 |  |  |  | P2F |  |  |  |
| T11TR09901C0 |  | PT-11 ; Wall Prime & 1st coat (TR RM) | 18d | 2012-02-12 | 2012-03-03 | T11TR09205C0 |  |  |  |  | 55d | 0d | WALL PAINT [37 h]; WALL PAINT [45 m2]; Cost | T11TR09901C0 | PT | C | 11 | TR | PA | 099 | 01 |  | BILL 10 | B10 | S2 | 01 | R00 | ACF06 |  | 099 | 360 | 20001110 |  |  |  |  |  |  |  |
| T11TR23009C0 |  | PT-11 ; 2nd Fix, Inst of VAV'S CHW connection (TR RM) | 36d | 2012-02-12 | 2012-03-24 | T11TR09205C0 |  |  |  |  | 25d | 0d | MECHANICAL [1450.8 h]; Cost | T11TR23009C0 | PT | C | 11 | TR | ME | 230 | 09 | 2n | BILL 10 | B10 | S2 | 2F | R00 | ACF07 | MEP | 230 |  |  |  |  |  |  |  |  |  |
| T11TR23011C0 |  | PT-11 ; 2nd Fix, Inst of VCD's/FD's (TR RM) | 36d | 2012-02-12 | 2012-03-24 | T11TR09205C0 |  |  |  |  | 25d | 0d | MECHANICAL [1753.2 h]; Cost | T11TR23011C0 | PT | C | 11 | TR | ME | 230 | 11 | 2n | BILL 10 | B10 | S2 | 2F | R00 | ACF07 | MEP | 230 |  |  |  |  |  |  |  |  |  |
| T11TR26007C0 |  | PT-11 ; 2nd Fix, Cable Pulling (TR RM) | 36d | 2012-02-12 | 2012-03-24 | T11TR09203C0, T11TR09205C0 |  |  |  |  | 37d | 12d | ELECTRICAL [2683.2 h]; Cost | T11TR26007C0 | PT | C | 11 | TR | ME | 260 | 07 | 2n | BILL 10 | B10 | S2 | 2F | R00 | ACF07 | MEP | 260 |  |  |  |  |  |  |  |  |  |
| T11TR26009C0 |  | PT-11 ; 2nd Fix, Inst of Equipment (DB, TR, SG,BUS) (TR RM) | 54d | 2012-02-12 | 2012-04-14 | T11TR09205C0 |  |  |  |  | 37d | 6d | ELECTRICAL [3943.2 h]; Cost | T11TR26009C0 | PT | C | 11 | TR | ME | 260 | 09 | 2n | BILL 10 | B10 | S2 | 2F | R00 | ACF04 | MEP | 260 |  |  |  |  |  |  |  | E |  |
| T11TR26027C0 |  | PT-11 ; 2nd Fix, Wiring / Cabling (TR RM) | 30d | 2012-02-12 | 2012-03-17 | T11TR09203C0, T11TR09205C0 |  |  |  |  | 91d | 66d | ELECTRICAL [392.4 h]; Cost | T11TR26027C0 | PT | C | 11 | TR | ME | 260 | 27 | 2n | BILL 10 | B10 | S2 | 2F | R00 | ACF07 | MEP | 260 | 417 | 1318 |  |  |  |  |  |  |  |
| T11TR27020C0 |  | PT-11 ; 2nd Fix, Inst of ELV Equipment (Panels) (TR RM) | 48d | 2012-02-12 | 2012-04-07 | T11TR09205C0 |  |  |  |  | 25d | 0d | ELECTRICAL [1819.2 h]; Cost | T11TR27020C0 | PT | C | 11 | TR | ME | 270 | 20 | 2n | BILL 10 | B10 | S2 | 2F | R00 | ACF04 | MEP | 270 |  |  |  |  |  |  |  | E |  |
| T11TR09903C0 |  | PT-11 ; Wall - Final Paint (TR RM) | 12d | 2012-03-04 | 2012-03-17 | T11TR09901C0 |  |  |  |  | 135d | 110d | WALL PAINT [20 h]; WALL PAINT [24 m2]; Cost | T11TR09903C0 | PT | C | 11 | TR | PA | 099 | 03 |  | BILL 10 | B10 | S2 | 02 | R00 | ACF06 |  | 099 | 361 | 1312 |  |  |  |  |  |  |  |
| T11TR23013C0 |  | PT-11 ; 2nd Fix, Insulation of CHW pipe & Duct (TR RM) | 48d | 2012-03-25 | 2012-05-19 | T11TR23009C0, T11TR23011C0 |  |  |  |  | 25d | 0d | MECHANICAL [3064.8 h]; Cost | T11TR23013C0 | PT | C | 11 | TR | ME | 230 | 13 | 2n | BILL 10 | B10 | S2 | 2F | R00 | ACF07 | MEP | 230 |  |  |  |  |  |  |  |  |  |
| T11TR09501C0 |  | PT-11 ; Ceiling Grid and Service Tile (TR RM) | 12d | 2012-04-08 | 2012-04-21 | T11TR09205C0 SS+15d, T11TR26007C0, T11TR27020C0, T11TR09901C0 |  |  |  |  | 25d | 0d | CEILING GRID FOR GYPSUM [297.07 h]; CEILING GRID FOR GYPSUM [25.26 m2]; Cost | T11TR09501C0 | PT | C | 11 | TR | CE | 095 | 01 |  | BILL 10 | B10 | S2 | 01 | R00 | ACF06 |  | 095 | 336 | 1327 |  |  |  |  |  |  | 1 |
| T11TR27002C0 |  | PT-11 ; 2nd Fix, Dressing of ELV panels (TR RM) | 30d | 2012-04-08 | 2012-05-12 | T11TR09205C0, T11TR27020C0 |  |  |  |  | 25d | 0d | ELECTRICAL [273.6 h]; Cost | T11TR27002C0 | PT | C | 11 | TR | ME | 270 | 02 | 2n | BILL 10 | B10 | S2 | 2F | R00 | ACF07 | MEP | 270 |  |  |  |  |  |  |  |  |  |
| T11TR09601C0 |  | PT-11 ; Floor Finishes (TR RM) | 18d | 2012-04-22 | 2012-05-12 | T11TR09501C0 |  |  |  |  | 25d | 0d | ASSORTED FLOOR FINISH [1248 h]; ASSORTED FLOOR FINISH [693 m2]; Cost | T11TR09601C0 | PT | C | 11 | TR | FF | 096 | 01 |  | BILL 10 | B10 | S2 | 01 | R00 | ACF06 |  | FF | 359 | 20001120 |  |  |  |  |  |  |  |
| T11TR09905C0 |  | PT-11 ; Ceiling Prime & 1st coat (TR RM) | 18d | 2012-04-22 | 2012-05-12 | T11TR09501C0 |  |  |  |  | 75d | 32d | CEILING PAINT [4 h]; CEILING PAINT [3 m2]; Cost | T11TR09905C0 | PT | C | 11 | TR | PA | 099 | 05 |  | BILL 10 | B10 | S2 | 01 | R00 | ACF06 |  | 099 | 362 | 1313 |  |  |  |  |  |  |  |
| T11TR23003C0 |  | PT-11 ; Final Fix, Inst of Grilles & Diffusers (TR RM) | 30d | 2012-04-22 | 2012-05-26 | T11TR09501C0 |  |  |  |  | 31d | 6d | MECHANICAL [1498.8 h]; Cost | T11TR23003C0 | PT | C | 11 | TR | ME | 230 | 03 | FF | BILL 10 | B10 | S2 | FF | R00 | ACF07 | MEP | 230 |  |  |  |  |  |  |  |  |  |
| T11TR23023C0 |  | PT-11 ; 2nd Fix, Flexible ducts (TR RM) | 30d | 2012-04-22 | 2012-05-26 | T11TR09205C0, T11TR09501C0 |  |  |  |  | 31d | 6d | MECHANICAL [30 h]; Cost | T11TR23023C0 | PT | C | 11 | TR | ME | 230 | 23 | 2n | BILL 10 | B10 | S2 | 2F | R00 | ACF07 | MEP | 230 | 412 | 20001140 |  |  |  |  |  |  |  |
| T11TR23074C0 |  | PT-11 ; Final Fix, Grilles, panels & diffusers (TR RM) | 30d | 2012-04-22 | 2012-05-26 | T11TR09501C0 |  |  |  |  | 31d | 6d | MECHANICAL [1498.8 h]; Cost | T11TR23074C0 | PT | C | 11 | TR | ME | 230 | 74 | FF | BILL 10 | B10 | S2 | FF | R00 | ACF07 | MEP | 230 | 419 | 20001160 |  |  |  |  |  |  |  |
| T11TR26005C0 |  | PT-11 ; 2nd Fix, Wiring for Power/Lighting/Emergency (TR RM) | 30d | 2012-04-22 | 2012-05-26 | T11TR26026C0, T11TR09501C0 |  |  |  |  | 31d | 6d | ELECTRICAL [392.4 h]; Cost | T11TR26005C0 | PT | C | 11 | TR | ME | 260 | 05 | 2n | BILL 10 | B10 | S2 | 2F | R00 | ACF07 | MEP | 260 |  |  |  |  |  |  |  |  |  |
| T11TR26013C0 |  | PT-11 ; Final Fix, Termination & Gladding of Cables (TR RM) | 30d | 2012-04-22 | 2012-05-26 | T11TR26009C0, T11TR09501C0 |  |  |  |  | 31d | 6d | ELECTRICAL [148.8 h]; Cost | T11TR26013C0 | PT | C | 11 | TR | ME | 260 | 13 | FF | BILL 10 | B10 | S2 | FF | R00 | ACF07 | MEP | 260 |  |  |  |  |  |  |  |  |  |
| T11TR26015C0 |  | PT-11 ; Final Fix, Inst of Ceiling rose (TR RM) | 30d | 2012-04-22 | 2012-05-26 | T11TR09501C0 |  |  |  |  | 31d | 6d | ELECTRICAL [61.2 h]; Cost | T11TR26015C0 | PT | C | 11 | TR | ME | 260 | 15 | FF | BILL 10 | B10 | S2 | FF | R00 | ACF07 | MEP | 260 |  |  |  |  |  |  |  |  |  |
| T11TR26019C0 |  | PT-11 ; Final Fix, Inst of Light fittings (TR RM) | 36d | 2012-04-22 | 2012-06-02 | T11TR09501C0 |  |  |  |  | 25d | 0d | ELECTRICAL [7815.6 h]; Cost | T11TR26019C0 | PT | C | 11 | TR | ME | 260 | 19 | FF | BILL 10 | B10 | S2 | FF | R00 | ACF07 | MEP | 260 |  |  |  |  |  |  |  |  |  |
| T11TR26076C0 |  | PT-11 ; Final Fix, Lighting fittings (TR RM) | 36d | 2012-04-22 | 2012-06-02 | T11TR09501C0 |  |  |  |  | 25d | 0d | ELECTRICAL [7815.6 h]; Cost | T11TR26076C0 | PT | C | 11 | TR | ME | 260 | 76 | FF | BILL 10 | B10 | S2 | FF | R00 | ACF07 | MEP | 260 | 420 | 20001170 |  |  |  |  |  |  |  |
| T11TR08105C0 |  | PT-11 ; Doors (TR RM) | 18d | 2012-05-13 | 2012-06-02 | T11TR08101C0, T11TR09501C0, T11TR09601C0, T11TR09901C0 |  |  |  |  | 53d | 0d | ASSORTED DOORS [40 h]; ASSORTED DOORS [4 no]; Cost | T11TR08105C0 | PT | C | 11 | TR | DO | 081 | 05 |  | BILL 10 | B10 | S2 | DR | R00 | ACF06 |  | 081 | 317 | 1325 |  |  |  |  | 08 |  |  |
| T11TR21115C0 |  | PT-11 ; 2nd Fix, Gaseous Fire Suppression (TR RM) | 18d | 2012-05-13 | 2012-06-02 | T11TR09601C0 |  |  |  |  | 25d | 0d | MECHANICAL [2626.8 h]; Cost | T11TR21115C0 | PT | C | 11 | TR | ME | 211 | 15 | 2n | BILL 10 | B10 | S2 | 2F | R00 | ACF07 | MEP | 211 | 411 | 20001130 |  |  |  |  |  |  |  |
| T11TR27030C0 |  | PT-11 ; Final Fix, Inst of ELV device (Detector/Speaker) (TR RM) | 18d | 2012-05-13 | 2012-06-02 | T11TR27002C0, T11TR09501C0 |  |  |  |  | 25d | 0d | ELECTRICAL [3571.2 h]; Cost | T11TR27030C0 | PT | C | 11 | TR | ME | 270 | 30 | FF | BILL 10 | B10 | S2 | FF | R00 | ACF07 | MEP | 270 |  |  |  |  |  |  |  |  |  |
| T11TR01006C0 |  | PT-11 ; 2nd, Ceiling Inspection by Consultants (TR RM) | 12d | 2012-05-20 | 2012-06-02 | T11TR23009C0, T11TR23011C0, T11TR23013C0, T11TR26007C0, T11TR09501C0 |  |  |  |  | 25d | 0d | Labor General [1.2 h]; Cost | T11TR01006C0 | PT | C | 11 | TR | ME | 010 | 06 | 2n | BILL 10 | B10 | S2 | CI | R00 | ACF07 | MEP | 010 |  |  |  |  |  |  |  |  |  |
| T11TR08709C0 |  | PT-11 ; Ironmongery (TR RM) | 16d | 2012-06-03 | 2012-06-21 | T11TR08105C0 |  |  |  |  | 53d | 28d | IRONMONGERY [50 h]; IRONMONGERY [5 no]; Cost | T11TR08709C0 | PT | C | 11 | TR | DO | 087 | 09 |  | BILL 10 | B10 | S2 | IM | R00 | ACF06 |  | 087 | 322 | 20001100 |  |  |  |  | 08 |  |  |
| T11TR09503C0 |  | PT-11 ; Ceiling closure (TR RM) | 14d | 2012-06-03 | 2012-06-19 | T11TR01006C0, T11TR09501C0, T11TR21115C0, T11TR26005C0, T11TR26007C0, T11TR26026C0, T11TR26027C0, T11TR23074C0, T11TR23003C0, T11TR26076C0, T11TR26015C0, T11TR26013C0, T11TR26019C0, T11TR27030C0, T11TR23023C0 |  |  |  |  | 25d | 0d | ASSORTED CEILING FINISH [33.21 h]; CEILING GYPSUM [8.2 h]; ASSORTED CEILING FINISH [54 m2]; CEILING GYPSUM [25 m2]; Cost | T11TR09503C0 | PT | C | 11 | TR | CE | 095 | 03 |  | BILL 10 | B10 | S2 | 02 | R00 | ACF06 |  | 095 | 337 | 20001080 |  |  |  |  |  |  |  |
| T11TR09907C0 |  | PT-11 ; Ceiling - Final paint (TR RM) | 12d | 2012-06-20 | 2012-07-03 | T11TR09905C0, T11TR09503C0 |  |  |  |  | 43d | 18d | CEILING PAINT [2 h]; CEILING PAINT [1 m2]; Cost | T11TR09907C0 | PT | C | 11 | TR | PA | 099 | 07 |  | BILL 10 | B10 | S2 | 02 | R00 | ACF06 |  | 099 | 363 | 1314 |  |  |  |  |  |  |  |
| T11TR26017C0 |  | PT-11 ; Final Fix, Inst of Switch/Sockets (TR RM) | 12d | 2012-06-20 | 2012-07-03 | T11TR09901C0, T11TR09503C0 |  |  |  |  | 25d | 0d | ELECTRICAL [362.4 h]; Cost | T11TR26017C0 | PT | C | 11 | TR | ME | 260 | 17 | FF | BILL 10 | B10 | S2 | FF | R00 | ACF07 | MEP | 260 |  |  |  |  |  |  |  |  |  |
| T11TR01802C0 |  | PT-11 ; MEP de-snag, FIREM sign-off | 18d | 2012-07-04 | 2012-07-24 | T11TR26017C0, T11TR23074C0, T11TR23003C0, T11TR26076C0, T11TR26013C0, T11TR26015C0, T11TR26019C0, T11TR27030C0 |  |  |  |  | 25d | 0d | TESTING & COMMISSIONING [255 h]; Cost | S05CO01851C0 | PT | C | 11 | TR | SC | 018 | 53 |  | BILL 10 | B10 | S2 | 01 | R00 | ACF07 |  | 018 |  |  |  |  |  |  |  |  |  |
| T11TR01801C0 |  | PT-11 ; Touch-up & Clean / JV inspection /CIR /De-snag | 24d | 2012-07-25 | 2012-08-23 | T11TR01802C0, T11TR08709C0, T11TR09601C0, T11TR09903C0, T11TR09907C0, T11TR09503C0 |  |  |  |  | 25d | 0d | TESTING & COMMISSIONING [64 h]; Cost | T11TR01851C0 | PT | C | 11 | TR | SC | 018 | 51 |  | BILL 10 | B10 | S2 | 02 | R00 | ACF07 |  | 018 | 396 |  |  |  |  |  |  |  |  |
| T11TR01803C0 |  | PT-11 ; Consultant's final de-snag inspection | 11d | 2012-08-25 | 2012-09-05 | T11TR01801C0 |  |  |  |  | 25d | 6.44d | Labor General [1 h]; Cost | CP3TS01803C0 | PT | C | 11 | TR | SC | 018 | 03 |  | BILL 10 | B10 | S1 | 03 | R00 | ACF07 |  | 018 |  |  |  |  |  |  |  |  |  |

| ID | WBS | Activity | Duration | Start | Finish | Predecessors | Complete | Remaining | Planned start | Planned finish | Total float | Free float | Resources | Cost | Actual cost | Change Order # | NEW ACTIVITY ID | change id | P_811 | P_711 | U% | CCAD BUILDING(SET) | CCAD PHASE(SET) | CCAD FLOOR(SET) | CCAD ZONE(SET) | CCAD WORK(SET) | CCAD SECTION(SET) | CCAD SERIAL No.(SET) | CCAD CBS(SET) | CCAD BILL(SET) | CCAD HANDOVER(SET) | CCAD TAG(SET) | CCAD REV(SET) | CCADACF (SET) | CCAD CSA | CCAD SSCF | Act Selector % | R3 Partitions | user_number8 | user_integer1 | user_integer2 | user_number7 | July2011 Target% Complete | Claimed This Month | CCAD SUB ZONE MEP(SET) | CCAD DIVISION(SET) | CCAD MEQ | R3 Finish |
| --- | --- | --- | --- | --- | --- | --- | --- | --- | --- | --- | --- | --- | --- | --- | --- | --- | --- | --- | --- | --- | --- | --- | --- | --- | --- | --- | --- | --- | --- | --- | --- | --- | --- | --- | --- | --- | --- | --- | --- | --- | --- | --- | --- | --- | --- | --- | --- | --- |
|  | 04 | **Public Area ( Elev.Lobby & Corridors )** |  | 2011-07-10 | 2012-12-22 |  |  |  |  |  |  |  |  |  |  |  |  |  |  |  |  |  |  |  |  |  |  |  |  |  |  |  |  |  |  |  |  |  |  |  |  |  |  |  |  |  |  |  |
| T11PA09201C0 |  | PT-11 ; Metal Studs (Public Area) | 60d | 2011-07-10 A | 2011-11-03 | T11PA23001C0 SS+12d, TAFCI09202R02 FS+58d | 80% | 12d | 2011-08-13 | 2011-10-23 | 25d | 0d | PARTITIONS [5687 h]; PARTITIONS - Metal Studs [789 m]; Cost |  |  | 313 | 944 | S08PA09201C0 | 50 | 30 | 80 | PT | C | 11 | PA | PT | 092 | 01 | BILL 10 | B10 | S2 | 1F | R00 | ACF06 | GP | 092 | PMS | R3 |  |  |  |  |  |  |  |  |  |  |
| T11PA09203C0 |  | PT-11 ; Partitions early wall & 1st face (Public Area) | 33d | 2011-07-10 A | 2011-12-08 | T11PA09201C0 | 25% | 24.75d | 2011-08-27 | 2011-10-05 | 48.25d | 23.25d | PARTITIONS [789 m]; PARTITIONS [4449 h]; Cost |  |  | 314 | 945 | S08PA09203C0 |  |  | 25 | PT | C | 11 | PA | PT | 092 | 03 | BILL 10 | B10 | S2 | 2F | R00 | ACF06 | GP | 092 | P1F |  | 0 | 0 | 0 | 0 |  |  |  |  |  |  |
| T11PA23001C0 |  | PT-11 ; 1st Fix, Inst. of Supports for MEP (Public Area) | 120d | 2011-07-12 A | 2011-10-20 | T11CO07807C0 | 85% | 18d | 2011-08-11 | 2012-01-07 | 31d | 0d | MECHANICAL [4027.2 h]; Cost [45150.4 AED] | 45,150.38 | 38,377.83 |  |  | S08PA23001C0 | 85 | 10 | 85 | PT | C | 11 | PA | ME | 230 | 01 | BILL 10 | B10 | S2 | 1F | R00 | ACF04 | MEP | 230 | M1F |  | 0 | 0 | 0 | 0 | 20 | 13171.63 | 1S |  |  |  |
| T11PA22005C0 |  | PT-11 ; 1st Fix, Inst of Water supply pipe (ceiling) (Public Area) | 60d | 2011-09-05 A | 2011-12-28 | T11PA22019C0 SS+7d, T11PA23001C0 | 10% | 54d | 2011-11-17 | 2012-01-29 | 31d | 0d | PLUMBING [4548 h]; Cost [245665 AED] | 245,664.7 | 24,566.47 |  |  | S08PA22005C0 |  |  |  | PT | C | 11 | PA | ME | 220 | 05 | BILL 10 | B10 | S2 | 1F | R00 | ACF04 | MEP | 220 | M1F |  |  |  |  |  |  |  | 1S |  |  |  |
| T11PA22019C0 |  | PT-11 ; 1st Fix, Inst of Drainage pipe (ceiling) (Public Area) | 54d | 2011-09-05 A | 2011-12-10 | T11PA23001C0, T11PA26013C0 SS+14d | 30% | 37.8d | 2011-11-09 | 2012-01-14 | 31d | 0d | PLUMBING [2326.8 h]; Cost [74493.8 AED] | 74,493.83 | 22,348.15 |  |  | S08PA22019C0 |  |  | 10 | PT | C | 11 | PA | ME | 220 | 19 | BILL 10 | B10 | S2 | 1F | R00 | ACF04 | MEP | 220 | M1F |  |  |  |  |  |  |  | 1S |  |  |  |
| T11PA26001C0 |  | PT-11 ; 1st Fix, Inst of Trunking/Conduiting (Public Area) | 60d | 2011-09-05 A | 2011-12-28 | T11CO07807C0, T11PA23001C0 | 10% | 54d | 2011-09-22 | 2011-12-06 | 31d | 0d | ELECTRICAL [4268.4 h]; Cost [37790.1 AED] | 37,790.1 | 3,779.01 |  |  | S08PA26001C0 |  |  |  | PT | C | 11 | PA | ME | 260 | 01 | BILL 10 | B10 | S2 | 1F | R00 | ACF04 | MEP | 260 | M1F |  |  |  |  |  |  |  | 1S |  |  |  |
| T11PA26013C0 |  | PT-11 ; 1st Fix, Inst of Cable Tray (Public Area) | 48d | 2011-09-05 A | 2011-12-17 | T11CO07807C0, T11PA23001C0, T11PA27010C0 SS+10d | 10% | 43.2d | 2011-10-20 | 2011-12-20 | 31d | 0d | ELECTRICAL [399.6 h]; Cost [21571.3 AED] | 21,571.27 | 2,157.13 |  |  | S08PA26013C0 |  |  |  | PT | C | 11 | PA | ME | 260 | 13 | BILL 10 | B10 | S2 | 1F | R00 | ACF04 | MEP | 260 | M1F |  |  |  |  |  |  |  | 1S |  |  |  |
| T11PA27010C0 |  | PT-11 ; 1st Fix, Inst of Trunking for ELV system (Public Area) | 54d | 2011-09-05 A | 2011-11-13 | T11CO07807C0, T11PA23001C0, T11PA26001C0 SS+14d | 70% | 16.2d | 2011-10-09 | 2011-12-15 | 31d | 0d | ELECTRICAL [3202.8 h]; Cost [79240.1 AED] | 79,240.08 | 55,468.05 |  |  | S08PA27010C0 |  |  | 70 | PT | C | 11 | PA | ME | 270 | 10 | BILL 10 | B10 | S2 | 1F | R00 | ACF04 | MEP | 270 | M1F |  |  |  |  |  |  |  | 1S |  |  |  |
| T11PA21111C0 |  | PT-11 ; 1st Fix, Inst of Sprinkler main pipe (Public Area) | 48d | 2011-10-22 | 2011-12-21 | T11PA22005C0 SS+12d, T11PA23001C0 |  |  |  |  | 47.75d | 0d | MECHANICAL [1236 h]; Cost |  |  |  |  | S08PA21111C0 |  |  |  | PT | C | 11 | PA | ME | 211 | 11 | BILL 10 | B10 | S2 | 1F | R00 | ACF04 | MEP | 211 | M1F |  |  |  |  |  |  |  | 1S |  |  |  |
| T11PA22011C0 |  | PT-11 ; 2nd Fix, Drainage/Water pipe (wall) (Public Area) | 42d | 2011-11-05 | 2011-12-28 | T11PA09201C0 |  |  |  |  | 25d | 0d | PLUMBING [1378.8 h]; Cost |  |  |  |  | S08PA22011C0 |  |  |  | PT | C | 11 | PA | ME | 220 | 11 | BILL 10 | B10 | S2 | 2F | R00 | ACF07 | MEP | 220 |  |  |  |  |  |  |  |  | 2n |  |  |  |
| T11PA26009C0 |  | PT-11 ; 2nd Fix, Inst of Wall conduites (Public Area) | 42d | 2011-11-05 | 2011-12-28 | T11PA09201C0 |  |  |  |  | 25d | 0d | ELECTRICAL [734.4 h]; Cost |  |  |  |  | S08PA26009C0 |  |  |  | PT | C | 11 | PA | ME | 260 | 09 | BILL 10 | B10 | S2 | 2F | R00 | ACF07 | MEP | 260 |  |  |  |  |  |  | 20 | 2219.22 | 2n |  |  |  |
| T11PA23017C0 |  | PT-11 ; 1st Fix, Inst of CHW pipe (Public Area) | 54d | 2011-11-10 | 2012-01-15 | T11PA21111C0 SS+14d, T11PA23001C0 |  |  |  |  | 47.75d | 0d | MECHANICAL [2467.2 h]; Cost |  |  |  |  | S08PA23017C0 |  |  |  | PT | C | 11 | PA | ME | 230 | 17 | BILL 10 | B10 | S2 | 1F | R00 | ACF04 | MEP | 230 | M1F |  |  |  |  |  |  |  | 1S |  |  |  |
| T11PA23023C0 |  | PT-11 ; 1st Fix, Inst of Main Ducting (Public Area) | 60d | 2011-11-22 | 2012-02-02 | T11PA23001C0, T11PA23017C0 SS+10d |  |  |  |  | 73.75d | 0d | MECHANICAL [8022 h]; Cost |  |  |  |  | S08PA23023C0 |  |  |  | PT | C | 11 | PA | ME | 230 | 23 | BILL 10 | B10 | S2 | 1F | R00 | ACF04 | MEP | 230 | M1F |  |  |  |  |  |  |  | 1S |  |  |  |
| T11PA21117C0 |  | PT-11 ; 1st Fix, Inst of Sprinkler branch pipe (Public Area) | 48d | 2011-12-22 | 2012-02-18 | T11PA09201C0, T11PA21111C0 |  |  |  |  | 109.75d | 62d | MECHANICAL [561.6 h]; Cost |  |  |  |  | S08PA21117C0 |  |  |  | PT | C | 11 | PA | ME | 211 | 17 | BILL 10 | B10 | S2 | 1F | R00 | ACF04 | MEP | 211 | M1F |  |  |  |  |  |  |  | 1S |  |  |  |
| T11PA08103C0 |  | PT-11 ; Door Frames (Public Area) | 36d | 2011-12-28 | 2012-02-09 | T11PA09201C0, GNHE08101C0 FS+126d |  |  |  |  | 32d | 7d | ASSORTED DOORS [448 h]; Cost |  |  | 316 | 947 | S08PA08103C0 |  |  |  | PT | C | 11 | PA | DO | 081 | 03 | BILL 10 | B10 | S2 | DF | R00 | ACF06 |  | 081 |  |  |  |  |  |  |  |  |  | 08 |  |  |
| T11PA01005C0 |  | PT-11 ; 2nd, Wall Inspection by Consultant (Public Area) | 6d | 2011-12-29 | 2012-01-05 | T11PA22011C0, T11PA26009C0 |  |  |  |  | 25d | 0d | Labor General [1.2 h]; Cost |  |  |  |  | S08PA01005C0 |  |  |  | PT | C | 11 | PA | ME | 010 | 05 | BILL 10 | B10 | S2 | WI | R00 | ACF07 | MEP | 010 |  |  |  |  |  |  |  |  | 2n |  |  |  |
| T11PA27001C0 |  | PT-11 ; 1st Fix, Wiring/ Cabling work (Public Area) | 48d | 2011-12-29 | 2012-02-25 | T11PA26001C0, T11PA26013C0, T11PA27010C0 |  |  |  |  | 103.75d | 56d | ELECTRICAL [392.4 h]; Cost |  |  |  |  | S08PA27001C0 |  |  |  | PT | C | 11 | PA | ME | 270 | 01 | BILL 10 | B10 | S2 | 1F | R00 | ACF04 | MEP | 270 | M1F |  |  |  |  |  |  |  | 1S |  |  |  |
| T11PA09205C0 |  | PT-11 ; Partitions Closing (Public Area) | 36d | 2012-01-07 | 2012-02-18 | T11PA01005C0, T11PA09203C0, T11PA22005C0, T11PA22019C0, TAFOA09214C1 FF, TAFCI22011R02 FS+58d, T11PA08103C0 FF |  |  |  |  | 25d | 0d | PARTITIONS [789 m]; PARTITIONS [5697 h]; Cost |  |  | 315 | 946 | S08PA09205C0 |  |  |  | PT | C | 11 | PA | PT | 092 | 05 | BILL 10 | B10 | S2 | FF | R00 | ACF06 | GP | 092 | P2F | R3 |  |  |  |  |  |  |  |  |  |  |
| T11PA23009C0 |  | PT-11 ; 2nd Fix, Inst of VAV'S CHW connection (Public Area) | 42d | 2012-01-16 | 2012-03-05 | T11PA23017C0 |  |  |  |  | 47.75d | 0d | MECHANICAL [1450.8 h]; Cost |  |  |  |  | S08PA23009C0 |  |  |  | PT | C | 11 | PA | ME | 230 | 09 | BILL 10 | B10 | S2 | 2F | R00 | ACF07 | MEP | 230 |  |  |  |  |  |  |  |  | 2n |  |  |  |
| T11PA23008C0 |  | PT-11 ; 1st Fix, Inst of VCD's/FD's (Public Area) | 48d | 2012-02-05 | 2012-03-31 | T11PA23023C0 |  |  |  |  | 73.75d | 26d | MECHANICAL [1753.2 h]; Cost |  |  |  |  | S08PA23008C0 |  |  |  | PT | C | 11 | PA | ME | 230 | 08 | BILL 10 | B10 | S2 | 1F | R00 | ACF04 | MEP | 230 | M1F |  |  |  |  |  |  |  | 1S |  |  |  |
| T11PA09901C0 |  | PT-11 ; Wall Prime & 1st coat (Public Area) | 30d | 2012-02-19 | 2012-03-24 | T11PA09205C0 |  |  |  |  | 79.75d | 0d | WALL PAINT [866 h]; WALL PAINT [1080 m2]; Cost |  |  | 328 | 956 | S08PA09901C0 |  |  |  | PT | C | 11 | PA | PA | 099 | 01 | BILL 10 | B10 | S2 | 01 | R00 | ACF06 |  | 099 |  |  |  |  |  |  |  |  |  |  |  |  |
| T11PA26005C0 |  | PT-11 ; 2nd Fix, Wiring for Power/Lighting/Emergency (Public Area) | 42d | 2012-02-19 | 2012-04-07 | T11PA09205C0 |  |  |  |  | 139.75d | 0d | ELECTRICAL [392.4 h]; Cost |  |  |  |  | S08PA26005C0 |  |  |  | PT | C | 11 | PA | ME | 260 | 05 | BILL 10 | B10 | S2 | 2F | R00 | ACF07 | MEP | 260 |  |  |  |  |  |  |  |  | 2n |  |  |  |
| T11PA26007C0 |  | PT-11 ; 2nd Fix, Cable Pulling (Public Area) | 48d | 2012-02-19 | 2012-04-14 | T11PA09201C0 SS+6d, T11PA09205C0 |  |  |  |  | 175.75d | 128d | ELECTRICAL [2683.2 h]; Cost |  |  |  |  | S08PA26007C0 |  |  |  | PT | C | 11 | PA | ME | 260 | 07 | BILL 10 | B10 | S2 | 2F | R00 | ACF07 | MEP | 260 |  |  |  |  |  |  |  |  | 2n |  |  |  |
| T11PA26011C0 |  | PT-11 ; 2nd Fix, Inst of Equipment (DB) (Public Area) | 54d | 2012-02-19 | 2012-04-21 | T11PA09205C0 |  |  |  |  | 163d | 98d | ELECTRICAL [878.4 h]; Cost |  |  |  |  | S08PA26011C0 |  |  |  | PT | C | 11 | PA | ME | 260 | 11 | BILL 10 | B10 | S2 | 2F | R00 | ACF04 | MEP | 260 |  |  |  |  |  |  |  |  | 2n |  | E |  |
| T11PA26053C0 |  | PT-11 ; 2nd Fix, Wiring / Cabling (Public Area) | 42d | 2012-02-19 | 2012-04-07 | T11PA09203C0, T11PA09205C0 |  |  |  |  | 91.75d | 44d | ELECTRICAL [392.4 h]; Cost |  |  | 389 | 977 | S08PA26053C0 |  |  |  | PT | C | 11 | PA | ME | 260 | 53 | BILL 10 | B10 | S2 | 2F | R00 | ACF07 | MEP | 260 |  |  |  |  |  |  |  |  | 2n |  |  |  |
| T11PA23015C0 |  | PT-11 ; 2nd Fix, Insulation of CHW pipe & Duct (Public Area) | 48d | 2012-03-06 | 2012-04-30 | T11PA23009C0, T11PA23017C0, T11PA23023C0 |  |  |  |  | 47.75d | 0d | MECHANICAL [3064.8 h]; Cost |  |  |  |  | S08PA23015C0 |  |  |  | PT | C | 11 | PA | ME | 230 | 15 | BILL 10 | B10 | S2 | 2F | R00 | ACF07 | MEP | 230 |  |  |  |  |  |  |  |  | 2n |  |  |  |
| T11PA05501C0 |  | PT-11 ; Handrails & balustrade (Public Area) | 36d | 2012-03-25 | 2012-05-05 | T11PA09901C0, TAFT105509C0, TAFT805509C0 |  |  |  |  | 113.25d | 20d | SECONDARY STEEL [356 h]; Cost |  |  |  |  | S08PA05501C0 |  |  |  | PT | C | 11 | PA | SW | 055 | 01 | BILL 10 | B10 | S2 | 01 | R00 | ACF03 |  | a |  |  |  |  |  |  |  |  |  |  |  |  |
| T11PA26015C0 |  | PT-11 ; Final Fix, Termination & Gladding of Cables (Public Area) | 36d | 2012-04-08 | 2012-05-19 | T11PA26005C0 |  |  |  |  | 139.75d | 92d | ELECTRICAL [148.8 h]; Cost |  |  |  |  | S08PA26015C0 |  |  |  | PT | C | 11 | PA | ME | 260 | 15 | BILL 10 | B10 | S2 | FF | R00 | ACF07 | MEP | 260 |  |  |  |  |  |  |  |  | FF |  |  |  |
| T11PA09501C0 |  | PT-11 ; Ceiling Grid and Service Tile (Public Area) | 24d | 2012-05-01 | 2012-05-28 | T11PA09205C0 SS+15d, T11PA21117C0, T11PA23008C0, T11PA23009C0, T11PA23015C0, T11PA27001C0, TAFCI22022R02 FS+58d, T11PA26053C0 FF, T11PA09901C0 |  |  |  |  | 47.75d | 0d | CEILING GRID FOR GYPSUM [7543.63 h]; CEILING GRID FOR GYPSUM [645.55 m2]; Cost |  |  | 323 | 952 | S08PA09501C0 |  |  |  | PT | C | 11 | PA | CE | 095 | 01 | BILL 10 | B10 | S2 | 01 | R00 | ACF06 |  | 095 |  |  |  |  |  |  |  |  |  |  |  | R3 |
| T11PA09601C0 |  | PT-11 ; Flooring (Rubber & etc) (Public Area) | 30d | 2012-05-29 | 2012-07-03 | TAFCI22022R02 FS+58d, T11PA09501C0 |  |  |  |  | 93.25d | 0d | RUBBER FLOOR [48 h]; RUBBER FLOOR [114 m2]; Cost |  |  | 326 | 955 | S08PA09601C0 |  |  |  | PT | C | 11 | PA | FF | 096 | 01 | BILL 10 | B10 | S2 | 03 | R00 | ACF06 |  | RF |  |  |  |  |  |  |  |  |  |  |  | R3 |
| T11PA09602C0 |  | PT-11 ; Flooring (Stone) (Public Area) | 30d | 2012-05-29 | 2012-07-03 | TAFCI22022R02 FS+58d, T11PA09501C0, T11PA05501C0 |  |  |  |  | 93.25d | 0d | STONE FLOOR [27 m2]; STONE FLOOR [24 h]; Cost |  |  | 326 | 955 | S08PA09601C0 |  |  |  | PT | C | 11 | PA | FF | 096 | 01 | BILL 10 | B10 | S2 | 09 | R00 | ACF06 |  | ST |  |  |  |  |  |  |  |  |  |  |  | R3 |
| T11PA09905C0 |  | PT-11 ; Ceiling Prime & 1st coat (Public Area) | 30d | 2012-05-29 | 2012-07-03 | T11PA09501C0 |  |  |  |  | 131d | 0d | CEILING PAINT [55 h]; CEILING PAINT [67 m2]; Cost |  |  | 330 | 958 | S08PA09905C0 |  |  |  | PT | C | 11 | PA | PA | 099 | 05 | BILL 10 | B10 | S2 | 01 | R00 | ACF06 |  | 099 |  |  |  |  |  |  |  |  |  |  |  |  |
| T11PA21115C0 |  | PT-11 ; 2nd Fix, Inst of Sprinkler droppers (Public Area) | 42d | 2012-05-29 | 2012-07-17 | T11PA09501C0 |  |  |  |  | 53.75d | 0d | MECHANICAL [1602 h]; Cost |  |  |  |  | S08PA21115C0 |  |  |  | PT | C | 11 | PA | ME | 211 | 15 | BILL 10 | B10 | S2 | 2F | R00 | ACF07 | MEP | 211 |  |  |  |  |  |  |  |  | 2n |  |  |  |
| T11PA23021C0 |  | PT-11 ; 2nd Fix, Inst of Flexible Duct & Plenum boxes (Public Area) | 42d | 2012-05-29 | 2012-07-17 | T11PA09205C0, T11PA09501C0 |  |  |  |  | 53.75d | 0d | MECHANICAL [30 h]; Cost |  |  |  |  | S08PA23021C0 |  |  |  | PT | C | 11 | PA | ME | 230 | 21 | BILL 10 | B10 | S2 | 2F | R00 | ACF07 | MEP | 230 |  |  |  |  |  |  |  |  | 2n |  |  |  |
| T11PA26017C0 |  | PT-11 ; Final Fix, Inst of Ceiling rose (Public Area) | 36d | 2012-05-29 | 2012-07-10 | T11PA09501C0 |  |  |  |  | 47.75d | 0d | ELECTRICAL [61.2 h]; Cost |  |  |  |  | S08PA26017C0 |  |  |  | PT | C | 11 | PA | ME | 260 | 17 | BILL 10 | B10 | S2 | FF | R00 | ACF07 | MEP | 260 |  |  |  |  |  |  |  |  | FF |  |  |  |
| T11PA27002C0 |  | PT-11 ; 2nd Fix, Wiring Droppers (Public Area) | 42d | 2012-05-29 | 2012-07-17 | T11PA09501C0 |  |  |  |  | 47.75d | 0d | ELECTRICAL [392.4 h]; Cost |  |  |  |  | S08PA27002C0 |  |  |  | PT | C | 11 | PA | ME | 270 | 02 | BILL 10 | B10 | S2 | 2F | R00 | ACF07 | MEP | 270 |  |  |  |  |  |  |  |  | 2n |  |  |  |
| T11PA27020C0 |  | PT-11 ; 2nd Fix, Inst of ELV Equipment (Panels) (Public Area) | 66d | 2012-05-29 | 2012-08-14 | T11PA09205C0, T11PA09501C0 |  |  |  |  | 65d | 0d | ELECTRICAL [1819.2 h]; Cost |  |  |  |  | S08PA27020C0 |  |  |  | PT | C | 11 | PA | ME | 270 | 20 | BILL 10 | B10 | S2 | 2F | R00 | ACF04 | MEP | 270 |  |  |  |  |  |  |  |  | 2n |  | E |  |
| T11PA08107C0 |  | PT-11 ; Doors (Public Area) | 36d | 2012-07-04 | 2012-08-14 | T11PA08103C0, T11PA09501C0, T11PA09601C0, T11PA09901C0, T11PA09602C0 |  |  |  |  | 93.25d | 0d | ASSORTED DOORS [900 h]; ASSORTED DOORS [90 no]; Cost |  |  | 317 | 948 | S08PA08107C0 |  |  |  | PT | C | 11 | PA | DO | 081 | 07 | BILL 10 | B10 | S2 | DR | R00 | ACF06 |  | 081 |  |  |  |  |  |  |  |  |  | 08 |  |  |
| T11PA09903C0 |  | PT-11 ; Wall Final Paint (Public Area) | 30d | 2012-07-04 | 2012-08-07 | T11PA09901C0, T11PA09905C0, T11PA09501C0 |  |  |  |  | 131d | 72d | WALL PAINT [467 h]; WALL PAINT [581 m2]; Cost |  |  | 329 | 957 | S08PA09903C0 |  |  |  | PT | C | 11 | PA | PA | 099 | 03 | BILL 10 | B10 | S2 | 02 | R00 | ACF06 |  | 099 |  |  |  |  |  |  |  |  |  |  |  |  |
| T11PA26003C0 |  | PT-11 ; Final Fix, Inst of Light fittings (Public Area) | 48d | 2012-07-11 | 2012-09-06 | T11PA09501C0, T11PA26017C0 |  |  |  |  | 47.75d | 0d | ELECTRICAL [7815.6 h]; Cost |  |  |  |  | S08PA26003C0 |  |  |  | PT | C | 11 | PA | ME | 260 | 03 | BILL 10 | B10 | S2 | FF | R00 | ACF07 | MEP | 260 |  |  |  |  |  |  |  |  | FF |  |  |  |
| T11PA21113C0 |  | PT-11 ; Final Fix, Inst of Sprinklers head/ Extinguisher (Public Area) | 36d | 2012-07-18 | 2012-08-30 | T11PA09501C0, T11PA21115C0 |  |  |  |  | 53.75d | 6d | MECHANICAL [234 h]; Cost |  |  |  |  | S08PA21113C0 |  |  |  | PT | C | 11 | PA | ME | 211 | 13 | BILL 10 | B10 | S2 | FF | R00 | ACF07 | MEP | 211 |  |  |  |  |  |  |  |  | FF |  |  |  |
| T11PA23019C0 |  | PT-11 ; Final Fix, Inst of Grilles & Diffusers (Public Area) | 36d | 2012-07-18 | 2012-08-30 | T11PA09501C0, T11PA23021C0 |  |  |  |  | 53.75d | 6d | MECHANICAL [1498.8 h]; Cost |  |  |  |  | S08PA23019C0 |  |  |  | PT | C | 11 | PA | ME | 230 | 19 | BILL 10 | B10 | S2 | FF | R00 | ACF07 | MEP | 230 |  |  |  |  |  |  |  |  | FF |  |  |  |
| T11PA27030C0 |  | PT-11 ; Final Fix, Inst of ELV devise (Detector/Speaker) (Public Area) | 42d | 2012-07-18 | 2012-09-06 | T11PA09501C0, T11PA27002C0 |  |  |  |  | 47.75d | 0d | ELECTRICAL [3571.2 h]; Cost |  |  |  |  | S08PA27030C0 |  |  |  | PT | C | 11 | PA | ME | 270 | 30 | BILL 10 | B10 | S2 | FF | R00 | ACF07 | MEP | 270 |  |  |  |  |  |  |  |  | FF |  |  |  |
| T11PA08709C0 |  | PT-11 ; Ironmongery (Public Area) | 31.75d | 2012-08-15 | 2012-09-23 | T11PA08107C0 |  |  |  |  | 93.25d | 45.5d | IRONMONGERY [1280 h]; IRONMONGERY [128 no]; Cost |  |  | 322 | 951 | S08PA08709C0 |  |  |  | PT | C | 11 | PA | DO | 087 | 09 | BILL 10 | B10 | S2 | IM | R00 | ACF06 |  | 087 |  |  |  |  |  |  |  |  |  | 08 |  |  |
| T11PA09701C0 |  | PT-11 ; Wall finishes (ST, WD, WC) (Public Area) | 36d | 2012-08-15 | 2012-09-27 | T11PA26011C0, T11PA27020C0, TVT0114211C0, TVT0214211C0, TVT0714211C0, TVT3114211C0, TVT3214255C0, TVT3314245C0, TAFCI22022R02 FS+158d, T11PA09501C0, T11PA09601C0, T11PA09602C0 |  |  |  |  | 65d | 0d | ASSORTED WALL FINISH [764 h]; ASSORTED WALL FINISH [878 m2]; Cost |  |  | 105 | 1002 | S08PA09701C0 |  |  |  | PT | C | 11 | PA | WF | 097 | 01 | BILL 10 | B10 | S2 | 01 | R00 | ACF06 |  | 097 |  |  |  |  |  |  |  |  |  |  |  |  |
| T11PA09702C0 |  | PT-11 ; Ceramic Wall Tiles (Public Area) | 5.25d | 2012-08-15 | 2012-08-23 | T11PA26011C0, T11PA27020C0, TVT0114211C0, TVT0214211C0, TVT0714211C0, TVT3114211C0, TVT3214255C0, TVT3314245C0, T11PA09501C0 |  |  |  |  | 119.75d | 72d | ASSORTED WALL FINISH [1049 h]; ASSORTED WALL FINISH [201 m2]; Cost |  |  | 105 | 1002 | S08PA09701C0 |  |  |  | PT | C | 11 | PA | WF | 097 | 01 | BILL 10 | B10 | S2 | 04 | R00 | ACF06 |  | 097 |  |  |  |  |  |  |  |  |  |  |  |  |
| T11PA01006C0 |  | PT-11 ; 2nd, Ceiling Inspection by Consultants (Public Area) | 6d | 2012-09-08 | 2012-09-13 | T11PA21115C0, T11PA23009C0, T11PA23015C0, T11PA27002C0, T11PA09501C0, T11PA21113C0, T11PA23019C0, T11PA26015C0, T11PA26017C0, T11PA26003C0, T11PA27030C0 |  |  |  |  | 47.75d | 0d | Labor General [1.2 h]; Cost |  |  |  |  | S08PA01006C0 |  |  |  | PT | C | 11 | PA | ME | 010 | 06 | BILL 10 | B10 | S2 | CI | R00 | ACF07 | MEP | 010 |  |  |  |  |  |  |  |  | 2n |  |  |  |
| T11PA09503C0 |  | PT-11 ; Ceiling closure - ACT/Gypsum (Public Area) | 23.25d | 2012-09-15 | 2012-10-11 | T11PA01006C0, T11PA21115C0, T11PA26005C0, T11PA27001C0, T11PA27002C0, TAFOA09513C1 FF, T11PA23021C0, T11PA26007C0 |  |  |  |  | 47.75d | 0d | ASSORTED CEILING FINISH [851.77 h]; CEILING GYPSUM [211.76 h]; ASSORTED CEILING FINISH [1385 m2]; CEILING GYPSUM [646 m2]; Cost |  |  | 324 | 953 | S08PA09503C0 |  |  |  | PT | C | 11 | PA | CE | 095 | 03 | BILL 10 | B10 | S2 | 02 | R00 | ACF06 |  | 095 |  |  |  |  |  |  |  |  |  |  |  | R3 |
| T11PA11001C0 |  | PT-11 ; Wall Protection (WP, CG, WG, FCG) (Public Area) | 24d | 2012-09-29 | 2012-10-25 | T11PA09701C0, T11PA09903C0 SS |  |  |  |  | 65d | 17.25d | FF&E [42 h]; Cost |  |  | 326 | 1001 | S08PA11001C0 |  |  |  | PT | C | 11 | PA | WF | 110 | 01 | BILL 10 | B10 | S2 | 03 | R00 | ACF08 |  | b |  |  |  |  |  |  |  |  |  |  |  |  |
| T11PA11009C0 |  | PT-11 ; Signage (Public Area) | 15d | 2012-09-29 | 2012-10-15 | T11PA09701C0 |  |  |  |  | 74d | 26.25d | SIGNAGES [173 h]; SIGNAGES [172.58 no]; Cost |  |  | 322 | 951 | S08PA11009C0 |  |  |  | PT | C | 11 | PA | SA | 110 | 09 | BILL 10 | B10 | S2 | 09 | R00 | ACF08 |  | c |  |  |  |  |  |  |  |  |  | 08 |  |  |
| T11PA09907C0 |  | PT-11 ; Ceiling Final paint (Public Area) | 18d | 2012-10-11 | 2012-11-04 | T11PA09601C0, T11PA09905C0, T11PA09602C0, T11PA09503C0 |  |  |  |  | 59.75d | 12d | CEILING PAINT [29 h]; CEILING PAINT [36 m2]; Cost |  |  | 331 | 959 | S08PA09907C0 |  |  |  | PT | C | 11 | PA | PA | 099 | 07 | BILL 10 | B10 | S2 | 02 | R00 | ACF06 |  | 099 |  |  |  |  |  |  |  |  |  |  |  |  |
| T11PA26019C0 |  | PT-11 ; Final Fix, Inst of Switch/Sockets (Public Area) | 18d | 2012-10-11 | 2012-11-04 | T11PA09901C0, T11PA09503C0 |  |  |  |  | 47.75d | 0d | ELECTRICAL [362.4 h]; Cost |  |  |  |  | S08PA26019C0 |  |  |  | PT | C | 11 | PA | ME | 260 | 19 | BILL 10 | B10 | S2 | FF | R00 | ACF07 | MEP | 260 |  |  |  |  |  |  |  |  | FF |  |  |  |

| ID | WBS | Activity | Duration | Start | Finish | Predecessors | Complete | Remaining | Planned start | Planned finish | Total float | Free float | Resources | Cost | Actual cost | change id | CCAD BUILDING(SET) | CCAD PHASE(SET) | CCAD FLOOR(SET) | CCAD ZONE(SET) | CCAD WORK(SET) | CCAD SECTION(SET) | CCAD SERIAL No.(SET) | CCAD CBS(SET) | CCAD BILL(SET) | CCAD HANDOVER(SET) | CCAD TAG(SET) | CCAD REV(SET) | CCADACF (SET) | CCAD SSCF | RENZ % COMPLETE | Phase | Area/ Department | Grids | Are | Weight & Nos | Process | Levels | Claimed This Month | CCAD CSA | P_811 | P_711 | U% | user_number8 | user_integer1 | user_integer2 | user_number7 | July2011 Target% Complete | CCAD SUB ZONE MEP(SET) | Act Selector % | Change Order # | NEW ACTIVITY ID | CCAD DIVISION(SET) | CCAD MEQ |
| --- | --- | --- | --- | --- | --- | --- | --- | --- | --- | --- | --- | --- | --- | --- | --- | --- | --- | --- | --- | --- | --- | --- | --- | --- | --- | --- | --- | --- | --- | --- | --- | --- | --- | --- | --- | --- | --- | --- | --- | --- | --- | --- | --- | --- | --- | --- | --- | --- | --- | --- | --- | --- | --- | --- |
|  | 10 | **Precommissioning Tesing & snagging (Public Area)** |  | 2012-11-04 | 2012-12-22 |  |  |  |  |  |  |  |  |  |  |  |  |  |  |  |  |  |  |  |  |  |  |  |  |  |  |  |  |  |  |  |  |  |  |  |  |  |  |  |  |  |  |  |  |  |  |  |  |  |
| T11TS01805C0 |  | PT-11 ; MEP de-snag, FIREM sign-off | 12d | 2012-11-04 | 2012-11-19 | T11PA26015C0, T11PA21113C0, T11PA23019C0, T11PA26017C0, T11PA26003C0, T11PA27030C0, T11PA26019C0 |  |  |  |  | 47.75d | 0d | TESTING & COMMISSIONING [510 h]; Cost |  |  | T11TS01801C0 | PT | C | 11 | TS | SC | 018 | 01 | BILL 10 | B10 | S2 | 01 | R00 | ACF07 | 018 |  |  |  |  |  |  |  |  |  |  |  |  |  |  |  |  |  |  |  |  |  |  |  |  |
| T11TS01808C0 |  | PT-11 ; Touch-up & Clean / JV inspection /CIR /De-snag | 18d | 2012-11-19 | 2012-12-11 | T11PA08709C0, T11PA09601C0, T11PA09701C0, T11PA09903C0, T11PA09907C0, T11PA11001C0, T11PA11009C0, T11TS01805C0, T11PA05501C0, T11PA09602C0, T11PA09702C0, T11PA09503C0 |  |  |  |  | 47.75d | 2d | TESTING & COMMISSIONING [128 h]; Cost |  |  | T11TS01802C0 | PT | C | 11 | TS | SC | 018 | 02 | BILL 10 | B10 | S2 | 02 | R00 | ACF07 | 018 |  |  |  |  |  |  |  |  |  |  |  |  |  |  |  |  |  |  |  |  |  |  |  |  |
| T11TS01811C0 |  | PT-11 ; Consultant's final de-snag inspection | 7d | 2012-12-13 | 2012-12-22 | T11TS01808C0, T11TS01809C0 |  |  |  |  | 45.75d | 22.65d | Labor General [1 h]; Cost |  |  | T11TS01803C0 | PT | C | 11 | TS | SC | 018 | 03 | BILL 10 | B10 | S2 | 03 | R00 | ACF07 | 018 |  |  |  |  |  |  |  |  |  |  |  |  |  |  |  |  |  |  |  |  |  |  |  |  |
|  | 12 | **Level 12** |  | 2011-01-30 | 2013-02-12 |  |  |  |  |  |  |  |  |  |  |  |  |  |  |  |  |  |  |  |  |  |  |  |  |  |  |  |  |  |  |  |  |  |  |  |  |  |  |  |  |  |  |  |  |  |  |  |  |  |
|  | 01 | **Structure & Envelopment** |  | 2011-01-30 | 2012-03-11 |  |  |  |  |  |  |  |  |  |  |  |  |  |  |  |  |  |  |  |  |  |  |  |  |  |  |  |  |  |  |  |  |  |  |  |  |  |  |  |  |  |  |  |  |  |  |  |  |  |
| T12SA03301C0 |  | PT-12 ; Corewall Concrete (Zone SA) | 11d | 2011-01-30 A | 2011-02-13 A | T11SA03301C0 | 100% |  | 2011-02-26 | 2011-03-09 |  |  | CONCRETE [6280 h]; CONCRETE [158 m3]; Cost |  |  | T12SA03301C0 | PT | C | 12 | SA | CT | 033 | 01 | BILL 10 | B10 | S2 | 04 | R00 | ACF03 | 033 | 100 | Z2 | PA | TRUS | D | A10 | EREC | 10FLR |  |  |  |  |  |  |  |  |  |  |  |  |  |  |  |  |
| T12SB03303C0 |  | PT-12 ; Corewall Concrete (Zone SB) | 7d | 2011-02-27 A | 2011-05-31 A | T11SB03303C0 | 100% |  | 2011-03-01 | 2011-03-08 |  |  | CONCRETE [6280 h]; CONCRETE [158 m3]; Cost |  |  | T12SB03303C0 | PT | C | 12 | SB | CT | 033 | 03 | BILL 10 | B10 | S2 | 04 | R00 | ACF03 | 033 | 100 | Z2 | PA | TRUS | D | A10 | EREC | 10FLR |  |  |  |  |  |  |  |  |  |  |  |  |  |  |  |  |
| T12CO05101C0 |  | PT-12 ; Erection of Structural Steel of 12 th Floor (Common Zone) | 5d | 2011-04-20 A | 2011-06-01 A | T11CO05103C0, T12SA03301C0, T12SB03303C0 | 100% |  | 2011-05-18 | 2011-05-24 |  |  | STRUCTURAL STEEL [10893 h]; STRUCTURAL STEEL [356 T(Fe)]; Cost |  |  | T12CO05101C0 | PT | C | 12 | CO | ST | 051 | 01 | BILL 10 | B10 | S2 | 01 | R00 | ACF03 | 051 | 95 | Z2 | PA | 10TH | E | A12A | EREC | 11FLR | 208695.5 | ST |  |  |  |  |  |  |  |  |  |  |  |  |  |  |
| T12CO05103C0 |  | PT-12 ; Alignment & welding of 12th Floor (Common Zone) | 3d | 2011-04-20 A | 2011-06-02 A | T12CO05101C0 | 100% |  | 2011-05-24 | 2011-05-28 |  |  | STRUCTURAL STEEL [1152 h]; Cost |  |  | T12CO05103C0 | PT | C | 12 | CO | ST | 051 | 03 | BILL 10 | B10 | S2 | 02 | R00 | ACF03 | 051 | 95 | Z2 | PA | 10TH | E | A12A | EREC | 11FLR | 23188.5 | ST |  |  |  |  |  |  |  |  |  |  |  |  |  |  |
| T12CO05305C0 |  | PT-12 ; Metal Decking 12 FLR (Common Zone) | 12d | 2011-06-04 A | 2011-06-26 A | T12CO05103C0, T13CO05101C0 | 100% |  | 2011-06-01 | 2011-06-15 |  |  | METAL DECKING [2760 h]; METAL DECKING [3493 m2]; Cost |  |  | T12CO05305C0 | PT | C | 12 | CO | ST | 053 | 05 | BILL 10 | B10 | S2 | 03 | R00 | ACF03 | 053 |  | Z2 | PA | 10TH | E | A12A | MDEC | 11FLR | 446383.08 | ST |  |  |  |  |  |  |  |  |  |  |  |  |  |  |
| T12CO03399C0 |  | PT-12 ; Concrete on Metal Decking 12 FLR (Common Zone) | 10d | 2011-07-11 A | 2011-08-10 A | T12CO05305C0 | 100% |  | 2011-07-31 | 2011-08-10 |  |  | CONCRETE [23776 h]; CONCRETE [598 m3]; Cost |  |  | T12CO05335C0 | PT | C | 12 | CO | CT | 033 | 99 | BILL 10 | B10 | S2 | 08 | R00 | ACF03 | 033 |  | Z2 | PA | 10TH | E | A12A | MDEC | 11FLR | 490200.82 |  | 100 | 90 |  |  |  |  |  |  |  |  |  |  |  |  |
| T12CO07807C0 |  | PT-12 ; Cementitious Fire proofing Lvl 12 (Common Zone) | 12d | 2011-07-14 A | 2011-08-23 A | T13CO03399C0 | 100% |  | 2011-08-14 | 2011-08-28 |  |  | CEMENTITIOUS FIREPROOFING [3066 h]; CEMENTITIOUS FIREPROOFING [6132 m2]; Cost |  |  | T12CO07807C0 | PT | C | 12 | CO | ST | 078 | 07 | BILL 10 | B10 | S2 | 04 | R00 | ACF03 | 078 |  | Z2 | PA | 10TH | E | A12A | FIRE | 11FLR |  | ST | 100 | 30 |  |  |  |  |  |  |  |  |  |  |  |  |
| T12CO04403C0 |  | PT-12 ; C2 Bracket (Common Zone) | 42d | 2011-09-05 A | 2011-10-25 | T12CO07807C0, T13CO03399C0 FS+21d, T13CO07807C0 | 50% | 21d | 2011-09-10 | 2011-10-29 | 9d | 0d | FACADE CURTAIN WALL 2 [522.3 h]; Cost |  |  | T12CO04403C0 | PT | C | 12 | CO | FA | 044 | 03 | BILL 10 | B10 | S2 | FC2 | R00 | ACF05 | 044 |  |  |  |  |  |  |  |  |  | FA |  |  | 20 |  |  |  |  |  |  |  |  |  |  |  |
| T12CO04405C0 |  | PT-12 ; C2 Transom & Mullion (Common Zone) | 42d | 2011-09-05 A | 2011-11-14 | T12CO04403C0 FF+14d | 22% | 32.76d | 2011-09-26 | 2011-11-17 | 9d | 0d | FACADE CURTAIN WALL 2 [2088.7 h]; Cost |  |  | T12CO04405C0 | PT | C | 12 | CO | FA | 044 | 05 | BILL 10 | B10 | S2 | FC2 | R00 | ACF05 | 044 |  |  |  |  |  |  |  |  |  | FA |  |  | 0 |  |  |  |  |  |  |  |  |  |  |  |
| T12CO04407C0 |  | PT-12 ; C2 Glazing (Common Zone) | 42d | 2011-09-05 A | 2011-11-14 | T12CO04405C0 SS, T12CO04405C0 FF | 22% | 32.76d | 2011-09-26 | 2011-11-17 | 9d | 0d | FACADE CURTAIN WALL 2 [4766.9 h]; FACADE CURTAIN WALL 2 [1742 m2]; FACADE TOTAL QUANTITY m2 [1742 m2]; Cost |  |  | T12CO04407C0 | PT | C | 12 | CO | FA | 044 | 07 | BILL 10 | B10 | S2 | FC2 | R00 | ACF05 | 044 |  |  |  |  |  |  |  |  |  | FA |  |  | 0 |  |  |  |  |  |  |  |  |  |  |  |
| T12CO04415C0 |  | PT-12 ; SG Catwalk Installation (Common Zone) | 52d | 2012-01-09 | 2012-03-11 | TEXCO04403C0 SS+14d, T11CO04415C0 SS |  |  |  |  | 65.03d | 29.9d | Labor General [4687.6 h]; Cost |  |  | I05CO04411C0 | PT | C | 12 | CO | FA | 044 | 11 | BILL 10 | B10 | S2 | SG | R00 | ACF05 | 044 |  |  |  |  |  |  |  |  |  | FA |  |  |  |  |  |  |  |  |  |  |  |  |  |  |
|  | 02 | **PAT RM-1** |  | 2011-08-02 | 2013-02-04 |  |  |  |  |  |  |  |  |  |  |  |  |  |  |  |  |  |  |  |  |  |  |  |  |  |  |  |  |  |  |  |  |  |  |  |  |  |  |  |  |  |  |  |  |  |  |  |  |  |
| T12P123001C0 |  | PT-12 ; 1st Fix, Inst. of Supports for MEP (PAT RM-1) | 54d | 2011-08-02 A | 2011-10-31 | T12CO07807C0 | 50% | 26.94d | 2011-08-09 | 2011-10-13 | 16.31d | 0d | MECHANICAL [800.4 h]; Cost [45150.4 AED] | 45,150.38 | 22,575.19 | T12P123001C0 | PT | C | 12 | P1 | ME | 230 | 01 | BILL 10 | B10 | S2 | 1F | R00 | ACF04 | 230 |  |  |  |  |  |  |  |  | 2618.72 | MEP | 10 | 0 |  | 0 | 0 | 0 | 0 | 20 | 1S | M1F |  |  |  |  |
| T12P109201C0 |  | PT-12 ; Metal Studs (PAT RM-1) | 60d | 2011-08-10 A | 2011-11-14 | T12P123001C0 SS, T12CO04407C0 FF, T12CO04405C0 FF, T12P123001C0 FF | 50% | 30d | 2012-01-11 | 2012-03-21 | 57.65d | 0d | PARTITIONS [3551 h]; PARTITIONS - Metal Studs [493 m]; Cost |  |  | T12P109201C0 | PT | C | 12 | P1 | PT | 092 | 01 | BILL 10 | B10 | S2 | 1F | R00 | ACF06 | 092 |  |  |  |  |  |  |  |  |  | GP | 20 | 0 |  | 0 | 0 | 0 | 0 |  |  | PMS | 313 | 944 |  |  |
| T12P109203C0 |  | PT-12 ; Partitions 1st face (PAT RM-1) | 45d | 2011-09-05 A | 2011-12-28 | T12P109201C0 | 20% | 36d | 2011-09-19 | 2011-11-14 | 81.65d | 43.34d | PARTITIONS [493 m]; PARTITIONS [2772 h]; Cost |  |  | T12P109203C0 | PT | C | 12 | P1 | PT | 092 | 03 | BILL 10 | B10 | S2 | 2F | R00 | ACF06 | 092 |  |  |  |  |  |  |  |  |  | GP |  |  |  |  |  |  |  |  |  | P1F | 314 | 945 |  |  |
| T12P122011C0 |  | PT-12 ; 2nd Fix, Drainage/Water pipe (wall) (PAT RM-1) | 42d | 2011-09-05 A | 2011-12-31 | T12P109201C0 | 10% | 37.8d | 2011-09-19 | 2011-11-10 | 73.85d | 35.54d | PLUMBING [1378.8 h]; Cost [74493.8 AED] | 74,493.83 | 7,449.38 | T12P122011C0 | PT | C | 12 | P1 | ME | 220 | 11 | BILL 10 | B10 | S2 | 2F | R00 | ACF07 | 220 |  |  |  |  |  |  |  |  |  | MEP |  |  | 5 |  |  |  |  |  | 2n |  |  |  |  |  |
| T12P122019C0 |  | PT-12 ; 1st Fix, Inst of Drainage pipe (ceiling) (PAT RM-1) | 48d | 2011-09-05 A | 2012-01-14 | BLZHC01561C0, T12P123001C0, T12P126013C0 SS+14d | 10% | 43.2d | 2011-12-17 | 2012-02-13 | 16.31d | 0d | PLUMBING [1378.8 h]; Cost [74493.8 AED] | 74,493.83 | 7,449.38 | T12P122019C0 | PT | C | 12 | P1 | ME | 220 | 19 | BILL 10 | B10 | S2 | 1F | R00 | ACF04 | 220 |  |  |  |  |  |  |  |  |  | MEP |  |  | 5 |  |  |  |  |  | 1S | M1F |  |  |  |  |
| T12P126001C0 |  | PT-12 ; 1st Fix, Inst of Trunking/Conduiting (PAT RM-1) | 48d | 2011-09-05 A | 2011-12-27 | T12CO07807C0, T12P123001C0 | 10% | 43.2d | 2011-10-27 | 2011-12-28 | 16.31d | 0d | ELECTRICAL [734.4 h]; Cost [37790.1 AED] | 37,790.1 | 3,779.01 | T12P126001C0 | PT | C | 12 | P1 | ME | 260 | 01 | BILL 10 | B10 | S2 | 1F | R00 | ACF04 | 260 |  |  |  |  |  |  |  |  | 2219.22 | MEP |  |  |  |  |  |  |  | 20 | 1S | M1F |  |  |  |  |
| T12P127010C0 |  | PT-12 ; 1st Fix, Inst of Trunking for ELV system (PAT RM-1) | 48d | 2011-09-05 A | 2011-12-27 | T12CO07807C0, T12P123001C0, T12P126001C0 SS+14d | 10% | 43.2d | 2011-11-16 | 2012-01-15 | 16.31d | 0d | ELECTRICAL [1512 h]; Cost [79240.1 AED] | 79,240.08 | 7,924.01 | T12P127010C0 | PT | C | 12 | P1 | ME | 270 | 10 | BILL 10 | B10 | S2 | 1F | R00 | ACF04 | 270 |  |  |  |  |  |  |  |  |  | MEP |  |  |  |  |  |  |  |  | 1S | M1F |  |  |  |  |
| T12P126013C0 |  | PT-12 ; 1st Fix, Inst of Cable Tray (PAT RM-1) | 48d | 2011-10-31 | 2012-01-02 | T12CO07807C0, T12P123001C0, T12P127010C0 SS+10d |  |  |  |  | 16.31d | 0d | ELECTRICAL [399.6 h]; Cost |  |  | T12P126013C0 | PT | C | 12 | P1 | ME | 260 | 13 | BILL 10 | B10 | S2 | 1F | R00 | ACF04 | 260 |  |  |  |  |  |  |  |  |  | MEP |  |  |  |  |  |  |  |  | 1S | M1F |  |  |  |  |
| T12P126009C0 |  | PT-12 ; 2nd Fix, Inst of Wall conduites (PAT RM-1) | 42d | 2011-11-14 | 2012-01-05 | T12P109201C0 |  |  |  |  | 69.65d | 31.34d | ELECTRICAL [734.4 h]; Cost |  |  | T12P126009C0 | PT | C | 12 | P1 | ME | 260 | 09 | BILL 10 | B10 | S2 | 2F | R00 | ACF07 | 260 |  |  |  |  |  |  |  |  | 4438.43 | MEP |  |  |  |  |  |  |  | 25 | 2n |  |  |  |  |  |
| T12P122005C0 |  | PT-12 ; 1st Fix, Inst of Water supply pipe (ceiling) (PAT RM-1) | 60d | 2011-11-20 | 2012-02-01 | BLZHC01561C0, T12P122019C0 SS+10d, T12P123001C0 |  |  |  |  | 16.31d | 0d | PLUMBING [4548 h]; Cost |  |  | T12P122005C0 | PT | C | 12 | P1 | ME | 220 | 05 | BILL 10 | B10 | S2 | 1F | R00 | ACF04 | 220 |  |  |  |  |  |  |  |  |  | MEP |  |  |  |  |  |  |  |  | 1S | M1F |  |  |  |  |
| T12P105503C0 |  | PT-12 ; Ceiling Support for medical equipment (PAT RM-1) | 24d | 2011-11-22 | 2011-12-21 | T12P109201C0, TAFCI22011R20 FS+65d |  |  |  |  | 51.25d | 34.94d | SECONDARY STEEL [62 h]; STRUCTURAL STEEL [28 T(Fe)]; Cost |  |  | D03EY05503C0 | PT | C | 12 | P1 | SW | 055 | 03 | BILL 10 | B10 | S2 | 03 | R00 | ACF03 | b |  |  |  |  |  |  |  |  |  |  |  |  |  |  |  |  |  |  |  |  | 335 | 962 |  |  |
| T12P121111C0 |  | PT-12 ; 1st Fix, Inst of Sprinkler main pipe (PAT RM-1) | 48d | 2011-12-06 | 2012-02-01 | BLZHC01561C0, T12P122005C0 SS+12d, T12P123001C0 |  |  |  |  | 16.31d | 0d | MECHANICAL [853.2 h]; Cost |  |  | T12P121111C0 | PT | C | 12 | P1 | ME | 211 | 11 | BILL 10 | B10 | S2 | 1F | R00 | ACF04 | 211 |  |  |  |  |  |  |  |  |  | MEP |  |  |  |  |  |  |  |  | 1S | M1F |  |  |  |  |
| T12P109702C0 |  | PT-12 ; Installation of Bathroom Pods (PAT RM-1) | 0d | 2011-12-11 | 2011-12-11 | T11P109702C0, T11P209702C0, T12CO07807C0, AAFCI09201R02 FS+118d |  |  |  |  | 132.25d | 0d | Cost |  |  | T10P109701C0 | PT | C | 12 | P1 | BP | 097 | 01 | BILL 10 | B10 | S2 | FG | R00 | ACF06 | 097 |  |  |  |  |  |  |  |  |  |  |  |  |  |  |  |  |  |  |  |  | 105 | 1002 |  |  |
| T12P123017C0 |  | PT-12 ; 1st Fix, Inst of CHW pipe (PAT RM-1) | 54d | 2011-12-20 | 2012-02-23 | BLZHC01561C0, T12P121111C0 SS+12d, T12P123001C0, T12P105503C0 FF+18d |  |  |  |  | 16.31d | 0d | MECHANICAL [2467.2 h]; Cost |  |  | T12P123017C0 | PT | C | 12 | P1 | ME | 230 | 17 | BILL 10 | B10 | S2 | 1F | R00 | ACF04 | 230 |  |  |  |  |  |  |  |  |  | MEP |  |  |  |  |  |  |  |  | 1S | M1F |  |  |  |  |
| T12P122007C0 |  | PT-12 ; 1st Fix, Inst of Medical Gas pipe (PAT RM-1) | 48d | 2011-12-22 | 2012-02-19 | BLZHC01561C0, T12P121111C0 SS+14d, T12P123001C0 |  |  |  |  | 38.31d | 0d | PLUMBING [1149.6 h]; Cost |  |  | T12P122007C0 | PT | C | 12 | P1 | ME | 220 | 07 | BILL 10 | B10 | S2 | 1F | R00 | ACF04 | 220 |  |  |  |  |  |  |  |  |  | MEP |  |  |  |  |  |  |  |  | 1S | M1F |  |  |  |  |
| T12P122015C0 |  | PT-12 ; 2nd Fix, Medical Gas pipe (PAT RM-1) | 42d | 2011-12-22 | 2012-02-12 | T12P109201C0, T12P122007C0 SS |  |  |  |  | 38.31d | 0d | PLUMBING [1149.6 h]; Cost |  |  | T12P122015C0 | PT | C | 12 | P1 | ME | 220 | 15 | BILL 10 | B10 | S2 | 2F | R00 | ACF07 | 220 |  |  |  |  |  |  |  |  |  | MEP |  |  |  |  |  |  |  |  | 2n |  |  |  |  |  |
| T12P108103C0 |  | PT-12 ; Door Frames (PAT RM-1) | 36d | 2011-12-28 | 2012-02-09 | T12P109201C0, GNHE08101C0 FS+126d |  |  |  |  | 88.25d | 49.94d | ASSORTED DOORS [303 h]; Cost |  |  | T12P108103C0 | PT | C | 12 | P1 | DO | 081 | 03 | BILL 10 | B10 | S2 | DF | R00 | ACF06 | 081 |  |  |  |  |  |  |  |  |  |  |  |  |  |  |  |  |  |  |  |  | 316 | 947 | 08 |  |
| T12P123023C0 |  | PT-12 ; 1st Fix, Inst of Main Ducting (PAT RM-1) | 60d | 2012-01-02 | 2012-03-13 | BLZHC01561C0, T12P123001C0, T12P123017C0 SS+10d |  |  |  |  | 42.31d | 0d | MECHANICAL [8022 h]; Cost |  |  | T12P123023C0 | PT | C | 12 | P1 | ME | 230 | 23 | BILL 10 | B10 | S2 | 1F | R00 | ACF04 | 230 |  |  |  |  |  |  |  |  |  | MEP |  |  |  |  |  |  |  |  | 1S | M1F |  |  |  |  |
| T12P127001C0 |  | PT-12 ; 1st Fix, Wiring/ Cabling work (PAT RM-1) | 48d | 2012-01-02 | 2012-02-28 | T12P126001C0, T12P126013C0, T12P127010C0 |  |  |  |  | 102.31d | 86d | ELECTRICAL [392.4 h]; Cost |  |  | T12P127001C0 | PT | C | 12 | P1 | ME | 270 | 01 | BILL 10 | B10 | S2 | 1F | R00 | ACF04 | 270 |  |  |  |  |  |  |  |  |  | MEP |  |  |  |  |  |  |  |  | 1S | M1F |  |  |  |  |
| T12P105511C0 |  | PT-12 ; Wall reinforcement for MEP/Medical (PAT RM-1) | 24d | 2012-01-07 | 2012-02-02 | T12P109201C0, TAFCI22011R02 FS+65d |  |  |  |  | 51.25d | 12.94d | SECONDARY STEEL [26 h]; Cost |  |  | T12P105511C0 | PT | C | 12 | P1 | SW | 055 | 11 | BILL 10 | B10 | S2 | 03 | R00 | ACF03 | b |  |  |  |  |  |  |  |  |  |  |  |  |  |  |  |  |  |  |  |  |  |  |  |  |
| T12P121117C0 |  | PT-12 ; 1st Fix, Inst of Sprinkler branch pipe (PAT RM-1) | 48d | 2012-02-01 | 2012-03-29 | T12P109201C0, T12P121111C0, T12P105503C0 FF+18d |  |  |  |  | 76.31d | 60d | MECHANICAL [561.6 h]; Cost |  |  | T12P121117C0 | PT | C | 12 | P1 | ME | 211 | 17 | BILL 10 | B10 | S2 | 1F | R00 | ACF04 | 211 |  |  |  |  |  |  |  |  |  | MEP |  |  |  |  |  |  |  |  | 1S | M1F |  |  |  |  |
| T12P101005C0 |  | PT-12 ; 2nd, Wall Inspection by Consultant (PAT RM-1) | 6d | 2012-02-12 | 2012-02-19 | T12P122011C0, T12P122015C0, T12P126009C0 |  |  |  |  | 38.31d | 0d | Labor General [1.2 h]; Cost |  |  | T12P101005C0 | PT | C | 12 | P1 | ME | 010 | 05 | BILL 10 | B10 | S2 | WI | R00 | ACF07 | 010 |  |  |  |  |  |  |  |  |  | MEP |  |  |  |  |  |  |  |  | 2n |  |  |  |  |  |
| T12P109205C0 |  | PT-12 ; Partitions Closing (PAT RM-1) | 42d | 2012-02-19 | 2012-04-08 | T12P101005C0, T12P105511C0, T12P109203C0, T12P122005C0, T12P122019C0, TAFOA09214C1 FF, T12P109702C0 FF, T12P108103C0 FF |  |  |  |  | 38.31d | 0d | PARTITIONS [493 m]; PARTITIONS [3563 h]; Cost |  |  | T12P109205C0 | PT | C | 12 | P1 | PT | 092 | 05 | BILL 10 | B10 | S2 | FF | R00 | ACF06 | 092 |  |  |  |  |  |  |  |  |  | GP |  |  |  |  |  |  |  |  |  | P2F | 315 | 946 |  |  |
| T12P123009C0 |  | PT-12 ; 2nd Fix, Inst of VAV'S CHW connection (PAT RM-1) | 42d | 2012-02-23 | 2012-04-12 | T12P123017C0 |  |  |  |  | 16.31d | 0d | MECHANICAL [1450.8 h]; Cost |  |  | T12P123009C0 | PT | C | 12 | P1 | ME | 230 | 09 | BILL 10 | B10 | S2 | 2F | R00 | ACF07 | 230 |  |  |  |  |  |  |  |  |  | MEP |  |  |  |  |  |  |  |  | 2n |  |  |  |  |  |
| T12P123008C0 |  | PT-12 ; 1st Fix, Inst of VCD's/FD's (PAT RM-1) | 48d | 2012-03-13 | 2012-05-08 | T12P123023C0, T12P105503C0 FF+18d |  |  |  |  | 42.31d | 26d | MECHANICAL [1753.2 h]; Cost |  |  | T12P123008C0 | PT | C | 12 | P1 | ME | 230 | 08 | BILL 10 | B10 | S2 | 1F | R00 | ACF04 | 230 |  |  |  |  |  |  |  |  |  | MEP |  |  |  |  |  |  |  |  | 1S | M1F |  |  |  |  |
| T12P107103C0 |  | PT-12 ; Waterproofing (PAT RM-1) | 11.88d | 2012-04-08 | 2012-04-22 | T12P108103C0, T12P109205C0 |  |  |  |  | 146.31d | 58.12d | THERMAL & MOISTURE [504 h]; THERMAL & MOISTURE [3326 m2]; Cost |  |  | T12P107103C0 | PT | C | 12 | P1 | FF | 071 | 03 | BILL 10 | B10 | S2 | 01 | R00 | ACF03 | 071 |  |  |  |  |  |  |  |  |  |  |  |  |  |  |  |  |  |  |  |  | 105 | 999 |  |  |
| T12P109901C0 |  | PT-12 ; Wall Prime & 1st coat (PAT RM-1) | 30d | 2012-04-08 | 2012-05-13 | T12P109205C0 |  |  |  |  | 38.31d | 0d | WALL PAINT [587 h]; WALL PAINT [731 m2]; Cost |  |  | T12P109901C0 | PT | C | 12 | P1 | PA | 099 | 01 | BILL 10 | B10 | S2 | 01 | R00 | ACF06 | 099 |  |  |  |  |  |  |  |  |  |  |  |  |  |  |  |  |  |  |  |  | 328 | 956 |  |  |
| T12P126005C0 |  | PT-12 ; 2nd Fix, Wiring for Power/Lighting/Emergency (PAT RM-1) | 42d | 2012-04-08 | 2012-05-27 | T12P109205C0 |  |  |  |  | 116.19d | 0d | ELECTRICAL [392.4 h]; Cost |  |  | T12P126005C0 | PT | C | 12 | P1 | ME | 260 | 05 | BILL 10 | B10 | S2 | 2F | R00 | ACF07 | 260 |  |  |  |  |  |  |  |  |  | MEP |  |  |  |  |  |  |  |  | 2n |  |  |  |  |  |
| T12P126007C0 |  | PT-12 ; 2nd Fix, Cable Pulling (PAT RM-1) | 48d | 2012-04-08 | 2012-06-03 | T12P109201C0 SS+6d, T12P109205C0 |  |  |  |  | 152.19d | 112d | ELECTRICAL [2683.2 h]; Cost |  |  | T12P126007C0 | PT | C | 12 | P1 | ME | 260 | 07 | BILL 10 | B10 | S2 | 2F | R00 | ACF07 | 260 |  |  |  |  |  |  |  |  |  | MEP |  |  |  |  |  |  |  |  | 2n |  |  |  |  |  |
| T12P126011C0 |  | PT-12 ; 2nd Fix, Inst of Equipment (DB) (PAT RM-1) | 54d | 2012-04-08 | 2012-06-10 | T12P109205C0 |  |  |  |  | 140.19d | 82d | ELECTRICAL [878.4 h]; Cost |  |  | T12P126011C0 | PT | C | 12 | P1 | ME | 260 | 11 | BILL 10 | B10 | S2 | 2F | R00 | ACF04 | 260 |  |  |  |  |  |  |  |  |  | MEP |  |  |  |  |  |  |  |  | 2n |  |  |  |  | E |
| T12P126053C0 |  | PT-12 ; 2nd Fix, Wiring / Cabling (PAT RM-1) | 42d | 2012-04-08 | 2012-05-27 | T12P109203C0, T12P109205C0 |  |  |  |  | 44.31d | 28d | ELECTRICAL [392.4 h]; Cost |  |  | T12P126053C0 | PT | C | 12 | P1 | ME | 260 | 53 | BILL 10 | B10 | S2 | 2F | R00 | ACF07 | 260 |  |  |  |  |  |  |  |  |  | MEP |  |  |  |  |  |  |  |  | 2n |  | 389 | 977 |  |  |
| T12P123015C0 |  | PT-12 ; 2nd Fix, Insulation of CHW pipe & Duct (PAT RM-1) | 48d | 2012-04-12 | 2012-06-07 | T12P123009C0, T12P123017C0, T12P123023C0 |  |  |  |  | 16.31d | 0d | MECHANICAL [3064.8 h]; Cost |  |  | T12P123015C0 | PT | C | 12 | P1 | ME | 230 | 15 | BILL 10 | B10 | S2 | 2F | R00 | ACF07 | 230 |  |  |  |  |  |  |  |  |  | MEP |  |  |  |  |  |  |  |  | 2n |  |  |  |  |  |
| T12P105501C0 |  | PT-12 ; Handrails & balustrade (PAT RM-1) | 32d | 2012-05-13 | 2012-06-20 | T12P109901C0 |  |  |  |  | 54.31d | 38d | SECONDARY STEEL [230 h]; Cost |  |  | T12P105501C0 | PT | C | 12 | P1 | SW | 055 | 01 | BILL 10 | B10 | S2 | 01 | R00 | ACF03 | a |  |  |  |  |  |  |  |  |  |  |  |  |  |  |  |  |  |  |  |  |  |  |  |  |
| T12P126015C0 |  | PT-12 ; Final Fix, Termination & Gladding of Cables (PAT RM-1) | 36d | 2012-05-27 | 2012-07-09 | T12P126005C0 |  |  |  |  | 116.19d | 76d | ELECTRICAL [148.8 h]; Cost |  |  | T12P126015C0 | PT | C | 12 | P1 | ME | 260 | 15 | BILL 10 | B10 | S2 | FF | R00 | ACF07 | 260 |  |  |  |  |  |  |  |  |  | MEP |  |  |  |  |  |  |  |  | FF |  |  |  |  |  |
| T12P109501C0 |  | PT-12 ; Ceiling Grid and Service Tile (PAT RM-1) | 18d | 2012-06-07 | 2012-06-30 | T12P105503C0, T12P109205C0 SS+15d, T12P121117C0, T12P123008C0, T12P123009C0, T12P123015C0, T12P127001C0, T12P126053C0 FF, T12P109901C0 |  |  |  |  | 16.31d | 0d | CEILING GRID FOR GYPSUM [4870 h]; CEILING GRID FOR GYPSUM [416.8 m2]; Cost |  |  | T12P109501C0 | PT | C | 12 | P1 | CE | 095 | 01 | BILL 10 | B10 | S2 | 01 | R00 | ACF06 | 095 |  |  |  |  |  |  |  |  |  |  |  |  |  |  |  |  |  |  |  |  | 323 | 952 |  |  |
| T12P109510C0 |  | PT-12 ; Patient Lift Ceiling Rail (by others) (PAT RM-1) | 30d | 2012-06-07 | 2012-07-14 | T12P109501C0 SS |  |  |  |  | 118.19d | 78d | Labor General [0.2 h]; Cost |  |  | I06P109501C0 | PT | C | 12 | P1 | CE | 095 | 10 | BILL 10 | B10 | S2 | 02 | R00 | ACF06 | 095 |  |  |  |  |  |  |  |  |  |  |  |  |  |  |  |  |  |  |  |  | 323 | 952 |  |  |
| T12P109305C0 |  | PT-12 ; Flooring (Terrazzo) (PAT RM-1) | 30d | 2012-06-30 | 2012-08-04 | T12P107103C0, T12P109501C0 |  |  |  |  | 88.19d | 0d | TERRAZO FLOOR [1427 m2]; TERRAZO FLOOR [2568 h]; Cost |  |  | T12P109305C0 | PT | C | 12 | P1 | FF | 096 | 05 | BILL 10 | B10 | S2 | 07 | R00 | ACF06 | TZ |  |  |  |  |  |  |  |  |  |  |  |  |  |  |  |  |  |  |  |  | 106 | 1000 |  |  |
| T12P109601C0 |  | PT-12 ; Flooring (Rubber & etc) (PAT RM-1) | 30d | 2012-06-30 | 2012-08-04 | T12P109501C0, T12P105501C0 FF |  |  |  |  | 16.31d | 0d | RUBBER FLOOR [32 h]; RUBBER FLOOR [77 m2]; Cost |  |  | T12P109601C0 | PT | C | 12 | P1 | FF | 096 | 01 | BILL 10 | B10 | S2 | 03 | R00 | ACF06 | RF |  |  |  |  |  |  |  |  |  |  |  |  |  |  |  |  |  |  |  |  | 326 | 955 |  |  |
| T12P109905C0 |  | PT-12 ; Ceiling Prime & 1st coat (PAT RM-1) | 30d | 2012-06-30 | 2012-08-04 | T12P109501C0 |  |  |  |  | 118.19d | 0d | CEILING PAINT [36 h]; CEILING PAINT [43 m2]; Cost |  |  | T12P109905C0 | PT | C | 12 | P1 | PA | 099 | 05 | BILL 10 | B10 | S2 | 01 | R00 | ACF06 | 099 |  |  |  |  |  |  |  |  |  |  |  |  |  |  |  |  |  |  |  |  | 330 | 958 |  |  |
| T12P121115C0 |  | PT-12 ; 2nd Fix, Inst of Sprinkler droppers (PAT RM-1) | 42d | 2012-06-30 | 2012-08-18 | T12P109501C0 |  |  |  |  | 46.19d | 0d | MECHANICAL [1602 h]; Cost |  |  | T12P121115C0 | PT | C | 12 | P1 | ME | 211 | 15 | BILL 10 | B10 | S2 | 2F | R00 | ACF07 | 211 |  |  |  |  |  |  |  |  |  | MEP |  |  |  |  |  |  |  |  | 2n |  |  |  |  |  |
| T12P123021C0 |  | PT-12 ; 2nd Fix, Inst of Flexible Duct & Plenum boxes (PAT RM-1) | 42d | 2012-06-30 | 2012-08-18 | T12P109205C0, T12P109501C0 |  |  |  |  | 46.19d | 0d | MECHANICAL [30 h]; Cost |  |  | T12P123021C0 | PT | C | 12 | P1 | ME | 230 | 21 | BILL 10 | B10 | S2 | 2F | R00 | ACF07 | 230 |  |  |  |  |  |  |  |  |  | MEP |  |  |  |  |  |  |  |  | 2n |  |  |  |  |  |
| T12P126017C0 |  | PT-12 ; Final Fix, Inst of Ceiling rose (PAT RM-1) | 36d | 2012-06-30 | 2012-08-11 | T12P109501C0 |  |  |  |  | 40.19d | 0d | ELECTRICAL [61.2 h]; Cost |  |  | T12P126017C0 | PT | C | 12 | P1 | ME | 260 | 17 | BILL 10 | B10 | S2 | FF | R00 | ACF07 | 260 |  |  |  |  |  |  |  |  |  | MEP |  |  |  |  |  |  |  |  | FF |  |  |  |  |  |
| T12P127002C0 |  | PT-12 ; 2nd Fix, Wiring Droppers (PAT RM-1) | 42d | 2012-06-30 | 2012-08-18 | T12P109501C0 |  |  |  |  | 40.19d | 0d | ELECTRICAL [392.4 h]; Cost |  |  | T12P127002C0 | PT | C | 12 | P1 | ME | 270 | 02 | BILL 10 | B10 | S2 | 2F | R00 | ACF07 | 270 |  |  |  |  |  |  |  |  |  | MEP |  |  |  |  |  |  |  |  | 2n |  |  |  |  |  |
| T12P127020C0 |  | PT-12 ; 2nd Fix, Inst of ELV Equipment (Panels) (PAT RM-1) | 66d | 2012-06-30 | 2012-09-17 | T12P109205C0, T12P109501C0 |  |  |  |  | 58.19d | 0d | ELECTRICAL [1819.2 h]; Cost |  |  | T12P127020C0 | PT | C | 12 | P1 | ME | 270 | 20 | BILL 10 | B10 | S2 | 2F | R00 | ACF04 | 270 |  |  |  |  |  |  |  |  |  | MEP |  |  |  |  |  |  |  |  | 2n |  |  |  |  | E |
| T12P140303C0 |  | PT-12 ; Final Fix, Pneumatic Station (PAT RM-1) | 36d | 2012-06-30 | 2012-08-11 | T12P109501C0 |  |  |  |  | 130.19d | 90d | MECHANICAL [2974.8 h]; Cost |  |  | T12P140303C0 | PT | C | 12 | P1 | ME | 403 | 03 | BILL 10 | B10 | S2 | FF | R00 | ACF07 | 403 |  |  |  |  |  |  |  |  |  | MEP |  |  |  |  |  |  |  |  | FF |  |  |  |  |  |
| T12P106101C0 |  | PT-12 ; Wood / caseworks (PAT RM-1) | 48d | 2012-08-04 | 2012-10-01 | T12CO04407C0, T12P109501C0, T12P109601C0, T12P109901C0, TAFWA00101M0 |  |  |  |  | 16.31d | 0d | WOOD WORK/CASEWORK [873.9 no]; WOOD WORK/CASEWORK [1915 h]; Cost |  |  | T12P106101C0 | PT | C | 12 | P1 | WO | 061 | 01 | BILL 10 | B10 | S2 | WW | R00 | ACF06 | 061 |  |  |  |  |  |  |  |  |  |  |  |  |  |  |  |  |  |  |  |  | 332 | 960 |  |  |
| T12P106102C0 |  | PT-12 ; Head/Foot Wall (PAT RM-1) | 54d | 2012-08-04 | 2012-10-08 | T12CO04407C0, T12P109501C0, TAFWA00101M0, T12P106101C0 SS |  |  |  |  | 64.19d | 0d | WOOD WORK/CASEWORK [1649 h]; Cost |  |  | T12P106102C0 | PT | C | 12 | P1 | WO | 061 | 02 | BILL 10 | B10 | S2 | WW | R00 | ACF06 | 061 |  |  |  |  |  |  |  |  |  |  |  |  |  |  |  |  |  |  |  |  | 332 | 960 |  |  |
| T12P108107C0 |  | PT-12 ; Doors (PAT RM-1) | 36d | 2012-08-04 | 2012-09-17 | T12P108103C0, T12P109501C0, T12P109601C0, T12P109901C0 |  |  |  |  | 83.06d | 0d | ASSORTED DOORS [610 h]; ASSORTED DOORS [61 no]; Cost |  |  | T12P108107C0 | PT | C | 12 | P1 | DO | 081 | 07 | BILL 10 | B10 | S2 | DR | R00 | ACF06 | 081 |  |  |  |  |  |  |  |  |  |  |  |  |  |  |  |  |  |  |  |  | 317 | 948 | 08 |  |
| T12P109903C0 |  | PT-12 ; Wall Final Paint (PAT RM-1) | 30d | 2012-08-04 | 2012-09-10 | T12P109901C0, T12P109905C0, T12P109501C0 |  |  |  |  | 118.19d | 72d | WALL PAINT [316 h]; WALL PAINT [394 m2]; Cost |  |  | T12P109903C0 | PT | C | 12 | P1 | PA | 099 | 03 | BILL 10 | B10 | S2 | 02 | R00 | ACF06 | 099 |  |  |  |  |  |  |  |  |  |  |  |  |  |  |  |  |  |  |  |  | 329 | 957 |  |  |
| T12P122025C0 |  | PT-12 ; Final Fix, Inst of Sanitary Ware (PAT RM-1) | 42d | 2012-08-04 | 2012-09-24 | T12P109205C0, T12P109305C0 |  |  |  |  | 88.19d | 0d | PLUMBING [3690 h]; Cost |  |  | T12P122025C0 | PT | C | 12 | P1 | ME | 220 | 25 | BILL 10 | B10 | S2 | FF | R00 | ACF07 | 220 |  |  |  |  |  |  |  |  |  | MEP |  |  |  |  |  |  |  |  | FF |  |  |  |  |  |
| T12P122021C0 |  | PT-12 ; Final Fix, Terminate Sanitary Ware & Appliances (PAT RM-1) | 42d | 2012-08-11 | 2012-10-01 | T12P122011C0, T12P122025C0 SS+6d |  |  |  |  | 88.19d | 48d | PLUMBING [3361.2 h]; Cost |  |  | T12P122021C0 | PT | C | 12 | P1 | ME | 220 | 21 | BILL 10 | B10 | S2 | FF | R00 | ACF07 | 220 |  |  |  |  |  |  |  |  |  | MEP |  |  |  |  |  |  |  |  | FF |  |  |  |  |  |
| T12P126003C0 |  | PT-12 ; Final Fix, Inst of Light fittings (PAT RM-1) | 48d | 2012-08-11 | 2012-10-08 | T12P109501C0, T12P126017C0 |  |  |  |  | 40.19d | 0d | ELECTRICAL [7815.6 h]; Cost |  |  | T12P126003C0 | PT | C | 12 | P1 | ME | 260 | 03 | BILL 10 | B10 | S2 | FF | R00 | ACF07 | 260 |  |  |  |  |  |  |  |  |  | MEP |  |  |  |  |  |  |  |  | FF |  |  |  |  |  |

| ID | WBS | Activity | Duration | Start | Finish | Predecessors | Complete | Remaining | Planned start | Planned finish | Total float | Free float | Resources | Cost | Actual cost | change id | CCAD BUILDING(SET) | CCAD PHASE(SET) | CCAD FLOOR(SET) | CCAD ZONE(SET) | CCAD WORK(SET) | CCAD SECTION(SET) | CCAD SERIAL No.(SET) | CCAD SUB ZONE MEP(SET) | CCAD CBS(SET) | CCAD BILL(SET) | CCAD HANDOVER(SET) | CCAD TAG(SET) | CCAD REV(SET) | CCADACF (SET) | CCAD CSA | CCAD SSCF | Change Order # | NEW ACTIVITY ID | CCAD DIVISION(SET) | P_811 | P_711 | U% | Act Selector % | user_number8 | user_integer1 | user_integer2 | user_number7 | July2011 Target% Complete | Claimed This Month | CCAD MEQ |
| --- | --- | --- | --- | --- | --- | --- | --- | --- | --- | --- | --- | --- | --- | --- | --- | --- | --- | --- | --- | --- | --- | --- | --- | --- | --- | --- | --- | --- | --- | --- | --- | --- | --- | --- | --- | --- | --- | --- | --- | --- | --- | --- | --- | --- | --- | --- |
| T12P121113C0 |  | PT-12 ; Final Fix, Inst of Sprinklers head/ Extinguisher (PAT RM-1) | 36d | 2012-08-18 | 2012-10-01 | T12P109501C0, T12P121115C0 |  |  |  |  | 46.19d | 6d | MECHANICAL [234 h]; Cost |  |  | T12P121113C0 | PT | C | 12 | P1 | ME | 211 | 13 | FF | BILL 10 | B10 | S2 | FF | R00 | ACF07 | MEP | 211 |  |  |  |  |  |  |  |  |  |  |  |  |  |  |
| T12P123019C0 |  | PT-12 ; Final Fix, Inst of Grilles & Diffusers (PAT RM-1) | 36d | 2012-08-18 | 2012-10-01 | T12P109501C0, T12P123021C0 |  |  |  |  | 46.19d | 6d | MECHANICAL [1498.8 h]; Cost |  |  | T12P123019C0 | PT | C | 12 | P1 | ME | 230 | 19 | FF | BILL 10 | B10 | S2 | FF | R00 | ACF07 | MEP | 230 |  |  |  |  |  |  |  |  |  |  |  |  |  |  |
| T12P127030C0 |  | PT-12 ; Final Fix, Inst of ELV device (Detector/Speaker) (PAT RM-1) | 42d | 2012-08-18 | 2012-10-08 | T12P109501C0, T12P127002C0 |  |  |  |  | 40.19d | 0d | ELECTRICAL [3571.2 h]; Cost |  |  | T12P127030C0 | PT | C | 12 | P1 | ME | 270 | 30 | FF | BILL 10 | B10 | S2 | FF | R00 | ACF07 | MEP | 270 |  |  |  |  |  |  |  |  |  |  |  |  |  |  |
| T12P108709C0 |  | PT-12 ; Ironmongery (PAT RM-1) | 29.12d | 2012-09-17 | 2012-10-22 | T12P108107C0 |  |  |  |  | 83.06d | 42.88d | IRONMONGERY [870 h]; IRONMONGERY [87 no]; Cost |  |  | T12P108709C0 | PT | C | 12 | P1 | DO | 087 | 09 |  | BILL 10 | B10 | S2 | IM | R00 | ACF06 |  | 087 | 322 | 951 | 08 |  |  |  |  |  |  |  |  |  |  |  |
| T12P109701C0 |  | PT-12 ; Wall finishes (ST, WD, WC) (PAT RM-1) | 36d | 2012-09-17 | 2012-10-31 | T12P126011C0, T12P127020C0, T12P109501C0, T12P109601C0, T12P109305C0 |  |  |  |  | 58.19d | 0d | ASSORTED WALL FINISH [519 h]; ASSORTED WALL FINISH [595 m2]; Cost |  |  | T12P109701C0 | PT | C | 12 | P1 | WF | 097 | 01 |  | BILL 10 | B10 | S2 | 01 | R00 | ACF06 |  | 097 | 105 | 1002 |  |  |  |  |  |  |  |  |  |  |  |  |
| T12P101006C0 |  | PT-12 ; 2nd, Ceiling Inspection by Consultants (PAT RM-1) | 6d | 2012-10-08 | 2012-10-15 | T12P121115C0, T12P123009C0, T12P123015C0, T12P127002C0, T12P109501C0, T12P121113C0, T12P123019C0, T12P126015C0, T12P126017C0, T12P126003C0, T12P127030C0 |  |  |  |  | 40.19d | 0d | Labor General [1.2 h]; Cost |  |  | T12P101006C0 | PT | C | 12 | P1 | ME | 010 | 06 | 2n | BILL 10 | B10 | S2 | CI | R00 | ACF07 | MEP | 010 |  |  |  |  |  |  |  |  |  |  |  |  |  |  |
| T12P122029C0 |  | PT-12 ; Final Fix, Medical Gas pipe (PAT RM-1) | 18d | 2012-10-08 | 2012-10-31 | T12P109501C0, T12P106102C0 |  |  |  |  | 64.19d | 24d | PLUMBING [1149.6 h]; Cost |  |  | T12P122029C0 | PT | C | 12 | P1 | ME | 220 | 29 | FF | BILL 10 | B10 | S2 | FF | R00 | ACF07 | MEP | 220 |  |  |  |  |  |  |  |  |  |  |  |  |  |  |
| T12P109503C0 |  | PT-12 ; Ceiling closure - ACT/Gypsum (PAT RM-1) | 18d | 2012-10-15 | 2012-11-07 | T12P101006C0, T12P109510C0, T12P121115C0, T12P126005C0, T12P127001C0, T12P127002C0, TAFOA09513C1 FF, T12P106101C0, T12P123021C0, T12P126007C0 |  |  |  |  | 40.19d | 0d | ASSORTED CEILING FINISH [549.81 h]; CEILING GYPSUM [136.74 h]; ASSORTED CEILING FINISH [894 m2]; CEILING GYPSUM [417 m2]; Cost |  |  | T12P109503C0 | PT | C | 12 | P1 | CE | 095 | 03 |  | BILL 10 | B10 | S2 | 02 | R00 | ACF06 |  | 095 | 324 | 953 |  |  |  |  |  |  |  |  |  |  |  |  |
| T12P111001C0 |  | PT-12 ; Wall Protection (WP, CG, WG, FCG) (PAT RM-1) | 18d | 2012-10-31 | 2012-11-22 | T12P109701C0, T12P109903C0 SS |  |  |  |  | 58.19d | 18d | FF&E [27 h]; Cost |  |  | T12P111001C0 | PT | C | 12 | P1 | WF | 110 | 01 |  | BILL 10 | B10 | S2 | 03 | R00 | ACF08 |  | b | 326 | 1001 |  |  |  |  |  |  |  |  |  |  |  |  |
| T12P109672C1 |  | PT-12, Carpet Tile Finish (Patient Room-1) | 0d | 2012-11-07 | 2012-11-07 | T12P109903C0 SS, T12P109907C0 SS |  |  |  |  | 70.19d | 30d | Cost |  |  |  | PT | C | 12 | P1 | FF | 096 |  |  |  | B10 |  |  | R00 | ACF06 | CPT | CPT |  |  |  |  |  |  |  |  |  |  |  |  |  |  |
| T12P109907C0 |  | PT-12 ; Ceiling Final paint (PAT RM-1) | 18d | 2012-11-07 | 2012-11-29 | T12P109601C0, T12P109905C0, T12P109503C0 |  |  |  |  | 52.19d | 0d | CEILING PAINT [20 h]; CEILING PAINT [23 m2]; Cost |  |  | T12P109907C0 | PT | C | 12 | P1 | PA | 099 | 07 |  | BILL 10 | B10 | S2 | 02 | R00 | ACF06 |  | 099 | 331 | 959 |  |  |  |  |  |  |  |  |  |  |  |  |
| T12P111003C0 |  | PT-12 ; FF & E (PAT RM-1) | 18d | 2012-11-07 | 2012-11-29 | T12P109601C0, T12P106101C0, T12P109503C0 |  |  |  |  | 52.19d | 12d | FF&E [1067 h]; Cost |  |  | T12P111003C0 | PT | C | 12 | P1 | WO | 110 | 03 |  | BILL 10 | B10 | S2 | 04 | R00 | ACF08 |  | a | 333 | 961 |  |  |  |  |  |  |  |  |  |  |  |  |
| T12P122027C0 |  | PT-12 ; Final Fix, Inst of All drain (PAT RM-1) | 18d | 2012-11-07 | 2012-11-29 | T12P109305C0, T12P109503C0 |  |  |  |  | 40.19d | 0d | PLUMBING [1378.8 h]; Cost |  |  | T12P122027C0 | PT | C | 12 | P1 | ME | 220 | 27 | FF | BILL 10 | B10 | S2 | FF | R00 | ACF07 | MEP | 220 |  |  |  |  |  |  |  |  |  |  |  |  |  |  |
| T12P126019C0 |  | PT-12 ; Final Fix, Inst of Switch/Sockets (PAT RM-1) | 18d | 2012-11-07 | 2012-11-29 | T12P109901C0, T12P109503C0 |  |  |  |  | 40.19d | 0d | ELECTRICAL [362.4 h]; Cost |  |  | T12P126019C0 | PT | C | 12 | P1 | ME | 260 | 19 | FF | BILL 10 | B10 | S2 | FF | R00 | ACF07 | MEP | 260 |  |  |  |  |  |  |  |  |  |  |  |  |  |  |
|  | 10 | **Precommissioning Tesing & snagging (PAT RM-1)** |  | 2012-11-29 | 2013-02-04 |  |  |  |  |  |  |  |  |  |  |  |  |  |  |  |  |  |  |  |  |  |  |  |  |  |  |  |  |  |  |  |  |  |  |  |  |  |  |  |  |  |
| T12TS01801C0 |  | PT-12 ; MEP de-snag, FIREM sign-off | 12d | 2012-11-29 | 2012-12-15 | T12P122025C0, T12P122027C0, T12P126015C0, T12P121113C0, T12P123019C0, T12P140303C0, T12P122029C0, T12P126017C0, T12P126003C0, T12P127030C0, T12P122021C0, T12P126019C0 |  |  |  |  | 40.19d | 0d | TESTING & COMMISSIONING [2040 h]; Cost |  |  | T12TS01801C0 | PT | C | 12 | TS | SC | 018 | 01 |  | BILL 10 | B10 | S2 | 01 | R00 | ACF07 |  | 018 |  |  |  |  |  |  |  |  |  |  |  |  |  |  |
| T12TS01806C0 |  | PT-12 ; Touch-up & Clean / JV inspection /CIR /De-snag | 17.88d | 2012-12-15 | 2013-01-06 | T12P106101C0, T12P106102C0, T12P108709C0, T12P109305C0, T12P109601C0, T12P109701C0, T12P109903C0, T12P109907C0, T12P111001C0, T12P111003C0, T12TS01801C0, T12P105501C0, T12P109503C0, T12P109672C1, T12P209682C1 |  |  |  |  | 40.19d | 17.09d | TESTING & COMMISSIONING [128 h]; Cost |  |  | T12TS01802C0 | PT | C | 12 | TS | SC | 018 | 02 |  | BILL 10 | B10 | S2 | 02 | R00 | ACF07 |  | 018 |  |  |  |  |  |  |  |  |  |  |  |  |  |  |
| T12TS01809C0 |  | PT-12 ; Consultant's final de-snag inspection | 7d | 2013-01-27 | 2013-02-04 | T12TS01806C0, T11TS01810C0 |  |  |  |  | 23.1d | 14.1d | Labor General [1 h]; Cost |  |  | T12TS01803C0 | PT | C | 12 | TS | SC | 018 | 03 |  | BILL 10 | B10 | S2 | 03 | R00 | ACF07 |  | 018 |  |  |  |  |  |  |  |  |  |  |  |  |  |  |
|  | 03 | **PAT RM-2** |  | 2011-08-02 | 2013-02-04 |  |  |  |  |  |  |  |  |  |  |  |  |  |  |  |  |  |  |  |  |  |  |  |  |  |  |  |  |  |  |  |  |  |  |  |  |  |  |  |  |  |
| T12P223008C0 |  | PT-12 ; 1st Fix, Inst of VCD's/FD's (PAT RM-2) | 54d | 2011-08-02 A | 2012-03-25 | T12P223023C0, T12P205503C0 FF+18d | 10% | 48.49d | 2012-02-20 | 2012-04-23 | 73.76d | 55.39d | MECHANICAL [1753.2 h]; Cost [94718.8 AED] | 94,718.75 | 9,471.87 | T12P223008C0 | PT | C | 12 | P2 | ME | 230 | 08 | 1S | BILL 10 | B10 | S2 | 1F | R00 | ACF04 | MEP | 230 |  |  |  | 10 | 0 | 10 | M1F |  |  |  |  |  |  |  |
| T12P209201C0 |  | PT-12 ; Metal Studs (PAT RM-2) | 60d | 2011-08-10 A | 2011-11-14 | T12P223001C0 SS, T12CO04407C0 FF, T12CO04405C0 FF, T12P223001C0 FF | 50% | 30d | 2012-01-18 | 2012-03-28 | 56.38d | 0d | PARTITIONS [2367 h]; PARTITIONS - Metal Studs [328 m]; Cost |  |  | T12P209201C0 | PT | C | 12 | P2 | PT | 092 | 01 |  | BILL 10 | B10 | S2 | 1F | R00 | ACF06 | GP | 092 | 313 | 944 |  | 20 | 0 |  | PMS | 0 | 0 | 0 | 0 |  |  |  |
| T12P209203C0 |  | PT-12 ; Partitions 1st face (PAT RM-2) | 45d | 2011-09-05 A | 2011-12-28 | T12P209201C0 | 20% | 36d | 2011-09-19 | 2011-11-14 | 68.38d | 50d | PARTITIONS [328 m]; PARTITIONS [1854 h]; Cost |  |  | T12P209203C0 | PT | C | 12 | P2 | PT | 092 | 03 |  | BILL 10 | B10 | S2 | 2F | R00 | ACF06 | GP | 092 | 314 | 945 |  |  |  |  | P1F |  |  |  |  |  |  |  |
| T12P222011C0 |  | PT-12 ; 2nd Fix, Drainage/Water pipe (wall) (PAT RM-2) | 42d | 2011-09-05 A | 2011-12-31 | T12P209201C0 | 10% | 37.8d | 2011-09-19 | 2011-11-10 | 60.58d | 42.2d | PLUMBING [1378.8 h]; Cost [74493.8 AED] | 74,493.83 | 7,449.38 | T12P222011C0 | PT | C | 12 | P2 | ME | 220 | 11 | 2n | BILL 10 | B10 | S2 | 2F | R00 | ACF07 | MEP | 220 |  |  |  |  |  |  |  |  |  |  |  |  |  |  |
| T12P227001C0 |  | PT-12 ; 1st Fix, Wiring/ Cabling work (PAT RM-2) | 48d | 2011-09-05 A | 2012-03-07 | T12P226001C0, T12P226013C0, T12P227010C0 | 5% | 45.6d | 2012-01-12 | 2012-03-08 | 88.65d | 70.28d | ELECTRICAL [392.4 h]; Cost [19679 AED] | 19,679.05 | 983.95 | T12P227001C0 | PT | C | 12 | P2 | ME | 270 | 01 | 1S | BILL 10 | B10 | S2 | 1F | R00 | ACF04 | MEP | 270 |  |  |  |  |  |  | M1F |  |  |  |  |  |  |  |
| T12P227010C0 |  | PT-12 ; 1st Fix, Inst of Trunking for ELV system (PAT RM-2) | 48d | 2011-09-05 A | 2012-01-08 | T12CO07807C0, T12P223001C0 | 10% | 43.2d | 2011-10-30 | 2011-12-29 | 18.38d | 0d | ELECTRICAL [1512 h]; Cost [79240.1 AED] | 79,240.08 | 7,924.01 | T12P227010C0 | PT | C | 12 | P2 | ME | 270 | 10 | 1S | BILL 10 | B10 | S2 | 1F | R00 | ACF04 | MEP | 270 |  |  |  |  |  |  | M1F |  |  |  |  |  |  |  |
| T12P223001C0 |  | PT-12 ; 1st Fix, Inst. of Supports for MEP (PAT RM-2) | 36d | 2011-10-01 | 2011-11-14 | T12CO07807C0 |  |  |  |  | 18.38d | 0d | MECHANICAL [800.4 h]; Cost |  |  | T12P223001C0 | PT | C | 12 | P2 | ME | 230 | 01 | 1S | BILL 10 | B10 | S2 | 1F | R00 | ACF04 | MEP | 230 |  |  |  |  |  |  | M1F |  |  |  |  | 20 | 2618.72 |  |
| T12P223023C0 |  | PT-12 ; 1st Fix, Inst of Main Ducting (PAT RM-2) | 60d | 2011-11-15 | 2012-01-26 | BLZHC01562C0, T12P223001C0 |  |  |  |  | 73.76d | 0d | MECHANICAL [8022 h]; Cost |  |  | T12P223023C0 | PT | C | 12 | P2 | ME | 230 | 23 | 1S | BILL 10 | B10 | S2 | 1F | R00 | ACF04 | MEP | 230 |  |  |  |  |  |  | M1F |  |  |  |  |  |  |  |
| T12P226001C0 |  | PT-12 ; 1st Fix, Inst of Trunking/Conduiting (PAT RM-2) | 48d | 2011-11-15 | 2012-01-12 | T12CO07807C0, T12P223001C0 |  |  |  |  | 88.65d | 0d | ELECTRICAL [734.4 h]; Cost |  |  | T12P226001C0 | PT | C | 12 | P2 | ME | 260 | 01 | 1S | BILL 10 | B10 | S2 | 1F | R00 | ACF04 | MEP | 260 |  |  |  |  |  |  | M1F |  |  |  |  | 20 | 2219.22 |  |
| T12P226009C0 |  | PT-12 ; 2nd Fix, Inst of Wall conduites (PAT RM-2) | 42d | 2011-11-15 | 2012-01-05 | T12P209201C0 |  |  |  |  | 56.38d | 38d | ELECTRICAL [734.4 h]; Cost |  |  | T12P226009C0 | PT | C | 12 | P2 | ME | 260 | 09 | 2n | BILL 10 | B10 | S2 | 2F | R00 | ACF07 | MEP | 260 |  |  |  |  |  |  |  |  |  |  |  | 25 | 4438.43 |  |
| T12P226013C0 |  | PT-12 ; 1st Fix, Inst of Cable Tray (PAT RM-2) | 48d | 2011-11-15 | 2012-01-12 | T12CO07807C0, T12P223001C0, T12P227010C0 SS+10d |  |  |  |  | 18.38d | 0d | ELECTRICAL [399.6 h]; Cost |  |  | T12P226013C0 | PT | C | 12 | P2 | ME | 260 | 13 | 1S | BILL 10 | B10 | S2 | 1F | R00 | ACF04 | MEP | 260 |  |  |  |  |  |  | M1F |  |  |  |  |  |  |  |
| T12P205503C0 |  | PT-12 ; Ceiling Support for medical equipment (PAT RM-2) | 24d | 2011-11-22 | 2011-12-21 | T12P209201C0, TAFCI22011R20 FS+65d |  |  |  |  | 86.25d | 36d | SECONDARY STEEL [72 h]; STRUCTURAL STEEL [29 T(Fe)]; Cost |  |  | D03EY05503C0 | PT | C | 12 | P2 | SW | 055 | 03 |  | BILL 10 | B10 | S2 | 03 | R00 | ACF03 |  | b | 335 | 962 |  |  |  |  |  |  |  |  |  |  |  |  |
| T12P222019C0 |  | PT-12 ; 1st Fix, Inst of Drainage pipe (ceiling) (PAT RM-2) | 48d | 2011-11-22 | 2012-01-19 | BLZHC01562C0, T12P223001C0, T12P226013C0 SS+6d |  |  |  |  | 18.38d | 0d | PLUMBING [1378.8 h]; Cost |  |  | T12P222019C0 | PT | C | 12 | P2 | ME | 220 | 19 | 1S | BILL 10 | B10 | S2 | 1F | R00 | ACF04 | MEP | 220 |  |  |  |  |  |  | M1F |  |  |  |  |  |  |  |
| T12P222005C0 |  | PT-12 ; 1st Fix, Inst of Water supply pipe (ceiling) (PAT RM-2) | 48d | 2011-11-30 | 2012-01-26 | BLZHC01562C0, T12P222019C0 SS+6d, T12P223001C0 |  |  |  |  | 18.38d | 0d | PLUMBING [4548 h]; Cost |  |  | T12P222005C0 | PT | C | 12 | P2 | ME | 220 | 05 | 1S | BILL 10 | B10 | S2 | 1F | R00 | ACF04 | MEP | 220 |  |  |  |  |  |  | M1F |  |  |  |  |  |  |  |
| T12P209702C0 |  | PT-12 ; Installation of Bathroom Pods (PAT RM-2) | 0d | 2011-12-11 | 2011-12-11 | T12P109702C0 SS, T12CO07807C0, AAFCI09201R02 FS+118d |  |  |  |  | 132.25d | 0d | Cost |  |  | T10P109701C0 | PT | C | 12 | P2 | BP | 097 | 01 |  | BILL 10 | B10 | S2 | FG | R00 | ACF06 |  | 097 | 105 | 1002 |  |  |  |  |  |  |  |  |  |  |  |  |
| T12P221111C0 |  | PT-12 ; 1st Fix, Inst of Sprinkler main pipe (PAT RM-2) | 48d | 2011-12-15 | 2012-02-11 | BLZHC01562C0, T12P222005C0 SS+12d, T12P223001C0 |  |  |  |  | 18.38d | 0d | MECHANICAL [853.2 h]; Cost |  |  | T12P221111C0 | PT | C | 12 | P2 | ME | 211 | 11 | 1S | BILL 10 | B10 | S2 | 1F | R00 | ACF04 | MEP | 211 |  |  |  |  |  |  | M1F |  |  |  |  |  |  |  |
| T12P223017C0 |  | PT-12 ; 1st Fix, Inst of CHW pipe (PAT RM-2) | 54d | 2011-12-22 | 2012-02-25 | BLZHC01562C0, T12P221111C0 SS+6d, T12P223001C0, T12P205503C0 FF+18d |  |  |  |  | 50.25d | 0d | MECHANICAL [2467.2 h]; Cost |  |  | T12P223017C0 | PT | C | 12 | P2 | ME | 230 | 17 | 1S | BILL 10 | B10 | S2 | 1F | R00 | ACF04 | MEP | 230 |  |  |  |  |  |  | M1F |  |  |  |  |  |  |  |
| T12P208103C0 |  | PT-12 ; Door Frames (PAT RM-2) | 36d | 2011-12-28 | 2012-02-09 | T12P209201C0, GNHE08101C0 FS+126d |  |  |  |  | 69.38d | 51d | ASSORTED DOORS [215 h]; Cost |  |  | T12P208103C0 | PT | C | 12 | P2 | DO | 081 | 03 |  | BILL 10 | B10 | S2 | DF | R00 | ACF06 |  | 081 | 316 | 947 | 08 |  |  |  |  |  |  |  |  |  |  |  |
| T12P223009C0 |  | PT-12 ; 2nd Fix, Inst of VAV'S CHW connection (PAT RM-2) | 42d | 2011-12-29 | 2012-02-18 | T12P223017C0 SS+6d |  |  |  |  | 56.25d | 6d | MECHANICAL [1450.8 h]; Cost |  |  | T12P223009C0 | PT | C | 12 | P2 | ME | 230 | 09 | 2n | BILL 10 | B10 | S2 | 2F | R00 | ACF07 | MEP | 230 |  |  |  |  |  |  |  |  |  |  |  |  |  |  |
| T12P222007C0 |  | PT-12 ; 1st Fix, Inst of Medical Gas pipe (PAT RM-2) | 48d | 2012-01-02 | 2012-02-27 | BLZHC01562C0, T12P221111C0 SS+14d, T12P223001C0 |  |  |  |  | 18.38d | 0d | PLUMBING [1149.6 h]; Cost |  |  | T12P222007C0 | PT | C | 12 | P2 | ME | 220 | 07 | 1S | BILL 10 | B10 | S2 | 1F | R00 | ACF04 | MEP | 220 |  |  |  |  |  |  | M1F |  |  |  |  |  |  |  |
| T12P222015C0 |  | PT-12 ; 2nd Fix, Medical Gas pipe (PAT RM-2) | 42d | 2012-01-02 | 2012-02-20 | T12P209201C0, T12P222007C0 SS |  |  |  |  | 18.38d | 0d | PLUMBING [1149.6 h]; Cost |  |  | T12P222015C0 | PT | C | 12 | P2 | ME | 220 | 15 | 2n | BILL 10 | B10 | S2 | 2F | R00 | ACF07 | MEP | 220 |  |  |  |  |  |  |  |  |  |  |  |  |  |  |
| T12P205511C0 |  | PT-12 ; Wall reinforcement for MEP/Medical (PAT RM-2) | 24d | 2012-01-07 | 2012-02-02 | T12P209201C0, TAFCI22011R02 FS+65d |  |  |  |  | 38.38d | 20d | SECONDARY STEEL [31 h]; Cost |  |  | T12P205511C0 | PT | C | 12 | P2 | SW | 055 | 11 |  | BILL 10 | B10 | S2 | 03 | R00 | ACF03 |  | b |  |  |  |  |  |  |  |  |  |  |  |  |  |  |
| T12P221117C0 |  | PT-12 ; 1st Fix, Inst of Sprinkler branch pipe (PAT RM-2) | 48d | 2012-02-12 | 2012-04-07 | T12P209201C0, T12P221111C0, T12P205503C0 FF+18d |  |  |  |  | 62.25d | 43.88d | MECHANICAL [561.6 h]; Cost |  |  | T12P221117C0 | PT | C | 12 | P2 | ME | 211 | 17 | 1S | BILL 10 | B10 | S2 | 1F | R00 | ACF04 | MEP | 211 |  |  |  |  |  |  | M1F |  |  |  |  |  |  |  |
| T12P201005C0 |  | PT-12 ; 2nd, Wall Inspection by Consultant (PAT RM-2) | 6d | 2012-02-21 | 2012-02-27 | T12P222011C0, T12P222015C0, T12P226009C0 |  |  |  |  | 18.38d | 0d | Labor General [1.2 h]; Cost |  |  | T12P201005C0 | PT | C | 12 | P2 | ME | 010 | 05 | 2n | BILL 10 | B10 | S2 | WI | R00 | ACF07 | MEP | 010 |  |  |  |  |  |  |  |  |  |  |  |  |  |  |
| T12P223015C0 |  | PT-12 ; 2nd Fix, Insulation of CHW pipe & Duct (PAT RM-2) | 48d | 2012-02-26 | 2012-04-21 | T12P223009C0, T12P223017C0, T12P223023C0 |  |  |  |  | 50.25d | 31.88d | MECHANICAL [3064.8 h]; Cost |  |  | T12P223015C0 | PT | C | 12 | P2 | ME | 230 | 15 | 2n | BILL 10 | B10 | S2 | 2F | R00 | ACF07 | MEP | 230 |  |  |  |  |  |  |  |  |  |  |  |  |  |  |
| T12P209205C0 |  | PT-12 ; Partitions Closing (PAT RM-2) | 47.88d | 2012-02-28 | 2012-04-23 | T12P201005C0, T12P205511C0, T12P209203C0, T12P222005C0, T12P222019C0, TAFOA09214C1 FF, T12P209702C0 FF, T11P209702C0 FF, T12P208103C0 SS |  |  |  |  | 18.38d | 0d | PARTITIONS [328 m]; PARTITIONS [2369 h]; Cost |  |  | T12P209205C0 | PT | C | 12 | P2 | PT | 092 | 05 |  | BILL 10 | B10 | S2 | FF | R00 | ACF06 | GP | 092 | 315 | 946 |  |  |  |  | P2F |  |  |  |  |  |  |  |
| T12P207103C0 |  | PT-12 ; Waterproofing (PAT RM-2) | 11.88d | 2012-04-23 | 2012-05-07 | T12P208103C0, T12P209205C0 |  |  |  |  | 126.25d | 48.12d | THERMAL & MOISTURE [384 h]; THERMAL & MOISTURE [2509 m2]; Cost |  |  | T12P207103C0 | PT | C | 12 | P2 | FF | 071 | 03 |  | BILL 10 | B10 | S2 | 01 | R00 | ACF03 |  | 071 | 105 | 999 |  |  |  |  |  |  |  |  |  |  |  |  |
| T12P209901C0 |  | PT-12 ; Wall Prime & 1st coat (PAT RM-2) | 30d | 2012-04-23 | 2012-05-28 | T12P209205C0 |  |  |  |  | 18.38d | 0d | WALL PAINT [415 h]; WALL PAINT [517 m2]; Cost |  |  | T12P209901C0 | PT | C | 12 | P2 | PA | 099 | 01 |  | BILL 10 | B10 | S2 | 01 | R00 | ACF06 |  | 099 | 328 | 956 |  |  |  |  |  |  |  |  |  |  |  |  |
| T12P226005C0 |  | PT-12 ; 2nd Fix, Wiring for Power/Lighting/Emergency (PAT RM-2) | 42d | 2012-04-23 | 2012-06-11 | T12P209205C0 |  |  |  |  | 96.38d | 0d | ELECTRICAL [392.4 h]; Cost |  |  | T12P226005C0 | PT | C | 12 | P2 | ME | 260 | 05 | 2n | BILL 10 | B10 | S2 | 2F | R00 | ACF07 | MEP | 260 |  |  |  |  |  |  |  |  |  |  |  |  |  |  |
| T12P226007C0 |  | PT-12 ; 2nd Fix, Cable Pulling (PAT RM-2) | 48d | 2012-04-23 | 2012-06-19 | T12P209201C0 SS+6d, T12P209205C0 |  |  |  |  | 132.25d | 115.94d | ELECTRICAL [2683.2 h]; Cost |  |  | T12P226007C0 | PT | C | 12 | P2 | ME | 260 | 07 | 2n | BILL 10 | B10 | S2 | 2F | R00 | ACF07 | MEP | 260 |  |  |  |  |  |  |  |  |  |  |  |  |  |  |
| T12P226011C0 |  | PT-12 ; 2nd Fix, Inst of Equipment (DB) (PAT RM-2) | 54d | 2012-04-23 | 2012-06-26 | T12P209205C0 |  |  |  |  | 114.13d | 72d | ELECTRICAL [878.4 h]; Cost |  |  | T12P226011C0 | PT | C | 12 | P2 | ME | 260 | 11 | 2n | BILL 10 | B10 | S2 | 2F | R00 | ACF04 | MEP | 260 |  |  |  |  |  |  |  |  |  |  |  |  |  | E |
| T12P226053C0 |  | PT-12 ; 2nd Fix, Wiring / Cabling (PAT RM-2) | 36d | 2012-04-23 | 2012-06-04 | T12P209203C0, T12P209205C0 |  |  |  |  | 42.38d | 24d | ELECTRICAL [392.4 h]; Cost |  |  | T12P226053C0 | PT | C | 12 | P2 | ME | 260 | 53 | 2n | BILL 10 | B10 | S2 | 2F | R00 | ACF07 | MEP | 260 | 389 | 977 |  |  |  |  |  |  |  |  |  |  |  |  |
| T12P205501C0 |  | PT-12 ; Handrails & balustrade (PAT RM-2) | 30.5d | 2012-05-28 | 2012-07-04 | T12P209901C0 |  |  |  |  | 107.63d | 29.5d | SECONDARY STEEL [174 h]; Cost |  |  | T12P205501C0 | PT | C | 12 | P2 | SW | 055 | 01 |  | BILL 10 | B10 | S2 | 01 | R00 | ACF03 |  | a |  |  |  |  |  |  |  |  |  |  |  |  |  |  |
| T12P209501C0 |  | PT-12 ; Ceiling Grid and Service Tile (PAT RM-2) | 30d | 2012-05-28 | 2012-07-03 | T12P205503C0, T12P209205C0 SS+15d, T12P221117C0, T12P223008C0, T12P223009C0, T12P223015C0, T12P227001C0, T12P226053C0 FF, T12P209901C0, T12P222007C0 |  |  |  |  | 18.38d | 0d | CEILING GRID FOR GYPSUM [3691.46 h]; CEILING GRID FOR GYPSUM [315.76 m2]; Cost |  |  | T12P209501C0 | PT | C | 12 | P2 | CE | 095 | 01 |  | BILL 10 | B10 | S2 | 01 | R00 | ACF06 |  | 095 | 323 | 952 |  |  |  |  |  |  |  |  |  |  |  |  |
| T12P209510C0 |  | PT-12 ; Patient Lift Ceiling Rail (by others) (PAT RM-2) | 30d | 2012-05-28 | 2012-07-03 | T12P209501C0 SS |  |  |  |  | 120.25d | 103.94d | Labor General [0.2 h]; Cost |  |  | I06P109501C0 | PT | C | 12 | P2 | CE | 095 | 10 |  | BILL 10 | B10 | S2 | 02 | R00 | ACF06 |  | 095 | 323 | 952 |  |  |  |  |  |  |  |  |  |  |  |  |
| T12P226015C0 |  | PT-12 ; Final Fix, Termination & Gladding of Cables (PAT RM-2) | 36d | 2012-06-11 | 2012-07-24 | T12P226005C0 |  |  |  |  | 96.38d | 80.06d | ELECTRICAL [148.8 h]; Cost |  |  | T12P226015C0 | PT | C | 12 | P2 | ME | 260 | 15 | FF | BILL 10 | B10 | S2 | FF | R00 | ACF07 | MEP | 260 |  |  |  |  |  |  |  |  |  |  |  |  |  |  |
| T12P209305C0 |  | PT-12 ; Flooring (Terrazzo) (PAT RM-2) | 30d | 2012-07-03 | 2012-08-07 | T12P207103C0, T12P209501C0, T12P205501C0 FF |  |  |  |  | 78.13d | 0d | TERRAZO FLOOR [1073 m2]; TERRAZO FLOOR [1936 h]; Cost |  |  | T12P209305C0 | PT | C | 12 | P2 | FF | 096 | 05 |  | BILL 10 | B10 | S2 | 07 | R00 | ACF06 |  | TZ | 106 | 1000 |  |  |  |  |  |  |  |  |  |  |  |  |
| T12P209601C0 |  | PT-12 ; Flooring (Rubber & etc) (PAT RM-2) | 30d | 2012-07-03 | 2012-08-07 | T12P209501C0 |  |  |  |  | 18.38d | 0d | RUBBER FLOOR [24 h]; RUBBER FLOOR [58 m2]; Cost |  |  | T12P209601C0 | PT | C | 12 | P2 | FF | 096 | 01 |  | BILL 10 | B10 | S2 | 03 | R00 | ACF06 |  | RF | 326 | 955 |  |  |  |  |  |  |  |  |  |  |  |  |
| T12P209905C0 |  | PT-12 ; Ceiling Prime & 1st coat (PAT RM-2) | 30d | 2012-07-03 | 2012-08-07 | T12P209501C0 |  |  |  |  | 108.13d | 0d | CEILING PAINT [28 h]; CEILING PAINT [33 m2]; Cost |  |  | T12P209905C0 | PT | C | 12 | P2 | PA | 099 | 05 |  | BILL 10 | B10 | S2 | 01 | R00 | ACF06 |  | 099 | 330 | 958 |  |  |  |  |  |  |  |  |  |  |  |  |
| T12P221115C0 |  | PT-12 ; 2nd Fix, Inst of Sprinkler droppers (PAT RM-2) | 42d | 2012-07-03 | 2012-08-23 | T12P209501C0 |  |  |  |  | 36.38d | 0d | MECHANICAL [1602 h]; Cost |  |  | T12P221115C0 | PT | C | 12 | P2 | ME | 211 | 15 | 2n | BILL 10 | B10 | S2 | 2F | R00 | ACF07 | MEP | 211 |  |  |  |  |  |  |  |  |  |  |  |  |  |  |
| T12P223021C0 |  | PT-12 ; 2nd Fix, Inst of Flexible Duct & Plenum boxes (PAT RM-2) | 42d | 2012-07-03 | 2012-08-23 | T12P209205C0, T12P209501C0 |  |  |  |  | 36.38d | 0d | MECHANICAL [30 h]; Cost |  |  | T12P223021C0 | PT | C | 12 | P2 | ME | 230 | 21 | 2n | BILL 10 | B10 | S2 | 2F | R00 | ACF07 | MEP | 230 |  |  |  |  |  |  |  |  |  |  |  |  |  |  |
| T12P226017C0 |  | PT-12 ; Final Fix, Inst of Ceiling rose (PAT RM-2) | 36d | 2012-07-03 | 2012-08-14 | T12P209501C0 |  |  |  |  | 60.38d | 0d | ELECTRICAL [61.2 h]; Cost |  |  | T12P226017C0 | PT | C | 12 | P2 | ME | 260 | 17 | FF | BILL 10 | B10 | S2 | FF | R00 | ACF07 | MEP | 260 |  |  |  |  |  |  |  |  |  |  |  |  |  |  |
| T12P227002C0 |  | PT-12 ; 2nd Fix, Wiring Droppers (PAT RM-2) | 42d | 2012-07-03 | 2012-08-23 | T12P209501C0 |  |  |  |  | 66.38d | 0d | ELECTRICAL [392.4 h]; Cost |  |  | T12P227002C0 | PT | C | 12 | P2 | ME | 270 | 02 | 2n | BILL 10 | B10 | S2 | 2F | R00 | ACF07 | MEP | 270 |  |  |  |  |  |  |  |  |  |  |  |  |  |  |
| T12P227020C0 |  | PT-12 ; 2nd Fix, Inst of ELV Equipment (Panels) (PAT RM-2) | 66d | 2012-07-03 | 2012-09-20 | T12P209205C0, T12P209501C0 |  |  |  |  | 42.13d | 0d | ELECTRICAL [1819.2 h]; Cost |  |  | T12P227020C0 | PT | C | 12 | P2 | ME | 270 | 20 | 2n | BILL 10 | B10 | S2 | 2F | R00 | ACF04 | MEP | 270 |  |  |  |  |  |  |  |  |  |  |  |  |  | E |
| T12P240303C0 |  | PT-12 ; Final Fix, Pneumatic Station (PAT RM-2) | 36d | 2012-07-03 | 2012-08-14 | T12P209501C0 |  |  |  |  | 120.25d | 103.94d | MECHANICAL [2974.8 h]; Cost |  |  | T12P240303C0 | PT | C | 12 | P2 | ME | 403 | 03 | FF | BILL 10 | B10 | S2 | FF | R00 | ACF07 | MEP | 403 |  |  |  |  |  |  |  |  |  |  |  |  |  |  |
| T12P226003C0 |  | PT-12 ; Final Fix, Inst of Light fittings (PAT RM-2) | 48d | 2012-07-10 | 2012-09-06 | T12P209501C0, T12P226017C0 SS+6d |  |  |  |  | 60.38d | 44.06d | ELECTRICAL [7815.6 h]; Cost |  |  | T12P226003C0 | PT | C | 12 | P2 | ME | 260 | 03 | FF | BILL 10 | B10 | S2 | FF | R00 | ACF07 | MEP | 260 |  |  |  |  |  |  |  |  |  |  |  |  |  |  |
| T12P227030C0 |  | PT-12 ; Final Fix, Inst of ELV device (Detector/Speaker) (PAT RM-2) | 42d | 2012-07-10 | 2012-08-30 | T12P209501C0, T12P227002C0 SS+6d |  |  |  |  | 66.38d | 50.06d | ELECTRICAL [3571.2 h]; Cost |  |  | T12P227030C0 | PT | C | 12 | P2 | ME | 270 | 30 | FF | BILL 10 | B10 | S2 | FF | R00 | ACF07 | MEP | 270 |  |  |  |  |  |  |  |  |  |  |  |  |  |  |
| T12P208107C0 |  | PT-12 ; Doors (PAT RM-2) | 36d | 2012-08-07 | 2012-09-20 | T12P208103C0, T12P209501C0, T12P209601C0, T12P209901C0 |  |  |  |  | 73.88d | 0d | ASSORTED DOORS [430 h]; ASSORTED DOORS [43 no]; Cost |  |  | T12P208107C0 | PT | C | 12 | P2 | DO | 081 | 07 |  | BILL 10 | B10 | S2 | DR | R00 | ACF06 |  | 081 | 317 | 948 | 08 |  |  |  |  |  |  |  |  |  |  |  |
| T12P209903C0 |  | PT-12 ; Wall Final Paint (PAT RM-2) | 30d | 2012-08-07 | 2012-09-13 | T12P209901C0, T12P209905C0, T12P209501C0 |  |  |  |  | 108.13d | 72d | WALL PAINT [225 h]; WALL PAINT [279 m2]; Cost |  |  | T12P209903C0 | PT | C | 12 | P2 | PA | 099 | 03 |  | BILL 10 | B10 | S2 | 02 | R00 | ACF06 |  | 099 | 329 | 957 |  |  |  |  |  |  |  |  |  |  |  |  |
| T12P222025C0 |  | PT-12 ; Final Fix, Inst of Sanitary Ware (PAT RM-2) | 42d | 2012-08-07 | 2012-09-27 | T12P209205C0, T12P209305C0 |  |  |  |  | 78.25d | 0d | PLUMBING [3361.2 h]; Cost |  |  | T12P222025C0 | PT | C | 12 | P2 | ME | 220 | 25 | FF | BILL 10 | B10 | S2 | FF | R00 | ACF07 | MEP | 220 |  |  |  |  |  |  |  |  |  |  |  |  |  |  |
| T12P206101C0 |  | PT-12 ; Wood / caseworks (PAT RM-2) | 48d | 2012-08-09 | 2012-10-07 | T11P206101C0 SS+5d, T12CO04407C0, T12P106101C0 SS+5d, T12P209601C0, T12P209901C0, TAFWA00101M0 |  |  |  |  | 16.31d | 0d | WOOD WORK/CASEWORK [659.26 no]; WOOD WORK/CASEWORK [1445 h]; Cost |  |  | T12P206101C0 | PT | C | 12 | P2 | WO | 061 | 01 |  | BILL 10 | B10 | S2 | WW | R00 | ACF06 |  | 061 | 332 | 960 |  |  |  |  |  |  |  |  |  |  |  |  |

| ID | WBS | Activity | Duration | Start | Finish | Predecessors | Complete | Remaining | Planned start | Planned finish | Total float | Free float | Resources | Change Order # | NEW ACTIVITY ID | change id | CCAD BUILDING(SET) | CCAD PHASE(SET) | CCAD FLOOR(SET) | CCAD ZONE(SET) | CCAD WORK(SET) | CCAD SECTION(SET) | CCAD SERIAL No.(SET) | CCAD CBS(SET) | CCAD BILL(SET) | CCAD HANDOVER(SET) | CCAD TAG(SET) | CCAD REV(SET) | CCADACF (SET) | CCAD SSCF | CCAD SUB ZONE MEP(SET) | CCAD CSA | CCAD DIVISION(SET) | P_811 | P_711 | U% | Act Selector % | CCAD MEQ | IDDD |
| --- | --- | --- | --- | --- | --- | --- | --- | --- | --- | --- | --- | --- | --- | --- | --- | --- | --- | --- | --- | --- | --- | --- | --- | --- | --- | --- | --- | --- | --- | --- | --- | --- | --- | --- | --- | --- | --- | --- | --- |
| T12P206102C0 |  | PT-12 ; Head/Foot Wall (PAT RM-2) | 48d | 2012-08-09 | 2012-10-07 | T12CO04407C0, T12P209501C0, TAFWA00101M0, T12P206101C0 SS |  |  |  |  | 16.31d | 0d | WOOD WORK/CASEWORK [1649 h]; Cost | 332 | 960 | T12P206102C0 | PT | C | 12 | P2 | WO | 061 | 02 | BILL 10 | B10 | S2 | WW | R00 | ACF06 | 061 |  |  |  |  |  |  |  |  |  |
| T12P222021C0 |  | PT-12 ; Final Fix, Terminate Sanitary Ware & Appliances (PAT RM-2) | 42d | 2012-08-14 | 2012-10-04 | T12P222011C0, T12P222025C0 SS+6d |  |  |  |  | 78.25d | 61.94d | PLUMBING [3361.2 h]; Cost |  |  | T12P222021C0 | PT | C | 12 | P2 | ME | 220 | 21 | BILL 10 | B10 | S2 | FF | R00 | ACF07 | 220 | FF | MEP |  |  |  |  |  |  |  |
| T12P221113C0 |  | PT-12 ; Final Fix, Inst of Sprinklers head/ Extinguisher (PAT RM-2) | 36d | 2012-08-23 | 2012-10-04 | T12P209501C0, T12P221115C0 |  |  |  |  | 36.38d | 20.06d | MECHANICAL [234 h]; Cost |  |  | T12P221113C0 | PT | C | 12 | P2 | ME | 211 | 13 | BILL 10 | B10 | S2 | FF | R00 | ACF07 | 211 | FF | MEP |  |  |  |  |  |  |  |
| T12P223019C0 |  | PT-12 ; Final Fix, Inst of Grilles & Diffusers (PAT RM-2) | 36d | 2012-08-23 | 2012-10-04 | T12P209501C0, T12P223021C0 |  |  |  |  | 36.38d | 20.06d | MECHANICAL [1498.8 h]; Cost |  |  | T12P223019C0 | PT | C | 12 | P2 | ME | 230 | 19 | BILL 10 | B10 | S2 | FF | R00 | ACF07 | 230 | FF | MEP |  |  |  |  |  |  |  |
| T12P208709C0 |  | PT-12 ; Ironmongery (PAT RM-2) | 28.25d | 2012-09-20 | 2012-10-24 | T12P208107C0 |  |  |  |  | 73.88d | 57.56d | IRONMONGERY [610 h]; IRONMONGERY [61 no]; Cost | 322 | 951 | T12P208709C0 | PT | C | 12 | P2 | DO | 087 | 09 | BILL 10 | B10 | S2 | IM | R00 | ACF06 | 087 |  |  | 08 |  |  |  |  |  |  |
| T12P209701C0 |  | PT-12 ; Wall finishes (ST, WD, WC) (PAT RM-2) | 36d | 2012-09-20 | 2012-11-04 | T12P226011C0, T12P227020C0, T12P209501C0, T12P209601C0, T12P209305C0 |  |  |  |  | 42.13d | 0d | ASSORTED WALL FINISH [369 h]; ASSORTED WALL FINISH [423 m2]; Cost | 105 | 1002 | T12P209701C0 | PT | C | 12 | P2 | WF | 097 | 01 | BILL 10 | B10 | S2 | 01 | R00 | ACF06 | 097 |  |  |  |  |  |  |  |  |  |
| T12P222029C0 |  | PT-12 ; Final Fix, Medical Gas pipe (PAT RM-2) | 18d | 2012-10-07 | 2012-10-30 | T12P209501C0 SS+6d, T12P206102C0 |  |  |  |  | 16.31d | 0d | PLUMBING [1149.6 h]; Cost |  |  | T12P222029C0 | PT | C | 12 | P2 | ME | 220 | 29 | BILL 10 | B10 | S2 | FF | R00 | ACF07 | 220 | FF | MEP |  |  |  |  |  |  |  |
| T12P201006C0 |  | PT-12 ; 2nd, Ceiling Inspection by Consultants (PAT RM-2) | 5.88d | 2012-10-30 | 2012-11-06 | T12P221115C0, T12P223009C0, T12P223015C0, T12P227002C0, T12P209501C0, T12P221113C0, T12P223019C0, T12P226015C0, T12P222029C0, T12P226017C0, T12P226003C0, T12P227030C0 |  |  |  |  | 16.31d | 0d | Labor General [1.2 h]; Cost |  |  | T12P201006C0 | PT | C | 12 | P2 | ME | 010 | 06 | BILL 10 | B10 | S2 | CI | R00 | ACF07 | 010 | 2n | MEP |  |  |  |  |  |  |  |
| T12P211001C0 |  | PT-12 ; Wall Protection (WP, CG, WG, FCG) (PAT RM-2) | 24d | 2012-11-04 | 2012-12-04 | T12P209701C0, T12P209903C0 SS |  |  |  |  | 42.13d | 25.81d | FF&E [18 h]; Cost | 326 | 1001 | T12P211001C0 | PT | C | 12 | P2 | WF | 110 | 01 | BILL 10 | B10 | S2 | 03 | R00 | ACF08 | b |  |  |  |  |  |  |  |  |  |
| T12P209503C0 |  | PT-12 ; Ceiling closure - ACT/Gypsum (PAT RM-2) | 18d | 2012-11-06 | 2012-11-28 | T12P201006C0, T12P209510C0, T12P221115C0, T12P226005C0, T12P227001C0, T12P227002C0, TAFOA09513C1 FF, T12P206101C0, T12P223021C0, T12P226007C0 |  |  |  |  | 16.31d | 0d | ASSORTED CEILING FINISH [416.36 h]; CEILING GYPSUM [103.53 h]; ASSORTED CEILING FINISH [677 m2]; CEILING GYPSUM [316 m2]; Cost | 324 | 953 | T12P209503C0 | PT | C | 12 | P2 | CE | 095 | 03 | BILL 10 | B10 | S2 | 02 | R00 | ACF06 | 095 |  |  |  |  |  |  |  |  |  |
| T12P209682C1 |  | PT-12, Carpet Tile Finish (Patient Room-2) | 0d | 2012-11-28 | 2012-11-28 | T12P209903C0 SS, T12P209907C0 SS |  |  |  |  | 53.31d | 13.12d | Cost |  |  |  | PT | C | 12 | P2 | FF | 096 |  |  | B10 |  |  | R00 | ACF06 | CPT |  | CPT |  |  |  |  |  |  |  |
| T12P209907C0 |  | PT-12 ; Ceiling Final paint (PAT RM-2) | 18d | 2012-11-28 | 2012-12-20 | T12P209601C0, T12P209905C0, T12P209503C0 |  |  |  |  | 28.19d | 0d | CEILING PAINT [15 h]; CEILING PAINT [18 m2]; Cost | 331 | 959 | T12P209907C0 | PT | C | 12 | P2 | PA | 099 | 07 | BILL 10 | B10 | S2 | 02 | R00 | ACF06 | 099 |  |  |  |  |  |  |  |  |  |
| T12P211003C0 |  | PT-12 ; FF & E (PAT RM-2) | 18d | 2012-11-28 | 2012-12-20 | T12P209601C0, T12P206101C0, T12P209503C0 |  |  |  |  | 28.19d | 11.88d | FF&E [715 h]; Cost | 333 | 961 | T12P211003C0 | PT | C | 12 | P2 | WO | 110 | 03 | BILL 10 | B10 | S2 | 04 | R00 | ACF08 | a |  |  |  |  |  |  |  |  |  |
| T12P222027C0 |  | PT-12 ; Final Fix, Inst of All drain (PAT RM-2) | 18d | 2012-11-28 | 2012-12-20 | T12P209305C0, T12P209503C0 |  |  |  |  | 16.31d | 0d | PLUMBING [1378.8 h]; Cost |  |  | T12P222027C0 | PT | C | 12 | P2 | ME | 220 | 27 | BILL 10 | B10 | S2 | FF | R00 | ACF07 | 220 | FF | MEP |  |  |  |  |  |  |  |
| T12P226019C0 |  | PT-12 ; Final Fix, Inst of Switch/Sockets (PAT RM-2) | 18d | 2012-11-28 | 2012-12-20 | T12P209901C0, T12P209503C0 |  |  |  |  | 16.31d | 0d | ELECTRICAL [362.4 h]; Cost |  |  | T12P226019C0 | PT | C | 12 | P2 | ME | 260 | 19 | BILL 10 | B10 | S2 | FF | R00 | ACF07 | 260 | FF | MEP |  |  |  |  |  |  |  |
|  | 10 | **Precommissioning Tesing & snagging (PAT RM-2)** |  | 2012-12-20 | 2013-02-04 |  |  |  |  |  |  |  |  |  |  |  |  |  |  |  |  |  |  |  |  |  |  |  |  |  |  |  |  |  |  |  |  |  |  |
| T12TS01804C0 |  | PT-12 ; MEP de-snag, FIREM sign-off | 11.88d | 2012-12-20 | 2013-01-05 | T12P222025C0, T12P222027C0, T12P226015C0, T12P222021C0, T12P221113C0, T12P223019C0, T12P240303C0, T12P222029C0, T12P226017C0, T12P226003C0, T12P227030C0, T12P226019C0 |  |  |  |  | 16.31d | 0d | TESTING & COMMISSIONING [510 h]; Cost |  |  | T12TS01801C0 | PT | C | 12 | TS | SC | 018 | 01 | BILL 10 | B10 | S2 | 01 | R00 | ACF07 | 018 |  |  |  |  |  |  |  |  |  |
| T12TS01807C0 |  | PT-12 ; Touch-up & Clean / JV inspection /CIR /De-snag | 18d | 2013-01-05 | 2013-01-27 | T12P206101C0, T12P206102C0, T12P208709C0, T12P209305C0, T12P209510C0, T12P209601C0, T12P209701C0, T12P209903C0, T12P209907C0, T12P211001C0, T12P211003C0, T12TS01804C0, T12P205501C0, T12P209503C0 |  |  |  |  | 16.31d | 0d | TESTING & COMMISSIONING [128 h]; Cost |  |  | T12TS01802C0 | PT | C | 12 | TS | SC | 018 | 02 | BILL 10 | B10 | S2 | 02 | R00 | ACF07 | 018 |  |  |  |  |  |  |  |  |  |
| T12TS01810C0 |  | PT-12 ; Consultant's final de-snag inspection | 7d | 2013-01-27 | 2013-02-04 | T12TS01807C0 |  |  |  |  | 16.31d | 0d | Labor General [1 h]; Cost |  |  | T12TS01803C0 | PT | C | 12 | TS | SC | 018 | 03 | BILL 10 | B10 | S2 | 03 | R00 | ACF07 | 018 |  |  |  |  |  |  |  |  |  |
|  | 05 | **TR Room** |  | 2011-08-10 | 2012-09-13 |  |  |  |  |  |  |  |  |  |  |  |  |  |  |  |  |  |  |  |  |  |  |  |  |  |  |  |  |  |  |  |  |  |  |
| T12TR09201C0 |  | PT-12 ; Metal Studs (TR RM) | 18d | 2011-08-10 A | 2011-11-01 | T12PA09201C0 SS | 80% | 3.6d | 2012-01-11 | 2012-01-31 | 45.9d | 0d | PARTITIONS [231 h]; PARTITIONS - Metal Studs [32 m]; Cost | 313 | 885 | T12TR09201C0 | PT | C | 12 | TR | PT | 092 | 01 | BILL 10 | B10 | S2 | 1F | R00 | ACF06 | 092 |  | GP |  | 30 | 0 | 80 | PMS |  |  |
| T12TR09203C0 |  | PT-12 ; Partitions 1st face (TR RM) | 24d | 2011-09-05 A | 2011-11-19 | T12TR09201C0 | 50% | 12d | 2011-10-25 | 2011-11-24 | 75.9d | 57.34d | PARTITIONS [32 m]; PARTITIONS [177 h]; Cost | 314 | 886 | T12TR09203C0 | PT | C | 12 | TR | PT | 092 | 03 | BILL 10 | B10 | S2 | 2F | R00 | ACF06 | 092 |  | GP |  |  |  |  | P1F |  |  |
| T12TR26026C0 |  | PT-12 ; 2nd Fix, Conduit (TR RM) | 30d | 2011-11-01 | 2011-12-12 | T12TR09201C0 |  |  |  |  | 45.9d | 0d | ELECTRICAL [734.4 h]; Cost |  |  | T12TR26026C0 | PT | C | 12 | TR | ME | 260 | 26 | BILL 10 | B10 | S2 | 2F | R00 | ACF07 | 260 | 2n | MEP |  |  |  |  |  |  |  |
| T12TR01005C0 |  | PT-12 ; 2nd, Wall Inspection by Consultant (TR RM) | 12d | 2011-12-12 | 2011-12-26 | T12TR26026C0 |  |  |  |  | 45.9d | 27.34d | Labor General [1.2 h]; Cost |  |  | T12TR01005C0 | PT | C | 12 | TR | ME | 010 | 05 | BILL 10 | B10 | S2 | WI | R00 | ACF07 | 010 | 2n | MEP |  |  |  |  |  |  |  |
| T12TR08101C0 |  | PT-12 ; Door Frames (TR RM) | 18d | 2011-12-28 | 2012-01-18 | T12TR09201C0, GNHE08101C0 FS+126d |  |  |  |  | 56.5d | 37.94d | ASSORTED DOORS [19 h]; Cost | 316 | 20001090 | T12TR08101C0 | PT | C | 12 | TR | DO | 081 | 01 | BILL 10 | B10 | S2 | DF | R00 | ACF06 | 081 |  |  | 08 |  |  |  |  |  |  |
| T12TR09205C0 |  | PT-12 ; Partitions Closing (TR RM) | 30d | 2012-01-28 | 2012-03-04 | T12TR01005C0, T12TR09201C0, T12TR09203C0, TAFOA09214C1 FF, T12TR08101C0 FF, T12PA09205C0 SS |  |  |  |  | 18.56d | 0d | PARTITIONS [32 m]; PARTITIONS [235 h]; Cost | 315 | 887 | T12TR09205C0 | PT | C | 12 | TR | PT | 092 | 05 | BILL 10 | B10 | S2 | FF | R00 | ACF06 | 092 |  | GP |  |  |  |  | P2F |  |  |
| T12TR09901C0 |  | PT-12 ; Wall Prime & 1st coat (TR RM) | 18d | 2012-03-04 | 2012-03-25 | T12TR09205C0 |  |  |  |  | 30.56d | 0d | WALL PAINT [37 h]; WALL PAINT [45 m2]; Cost | 360 | 20001110 | T12TR09901C0 | PT | C | 12 | TR | PA | 099 | 01 | BILL 10 | B10 | S2 | 01 | R00 | ACF06 | 099 |  |  |  |  |  |  |  |  |  |
| T12TR23009C0 |  | PT-12 ; 2nd Fix, Inst of VAV'S CHW connection (TR RM) | 36d | 2012-03-04 | 2012-04-15 | T12TR09205C0 |  |  |  |  | 18.56d | 0d | MECHANICAL [1450.8 h]; Cost |  |  | T12TR23009C0 | PT | C | 12 | TR | ME | 230 | 09 | BILL 10 | B10 | S2 | 2F | R00 | ACF07 | 230 | 2n | MEP |  |  |  |  |  |  |  |
| T12TR23011C0 |  | PT-12 ; 2nd Fix, Inst of VCD's/FD's (TR RM) | 36d | 2012-03-04 | 2012-04-15 | T12TR09205C0 |  |  |  |  | 18.56d | 0d | MECHANICAL [1753.2 h]; Cost |  |  | T12TR23011C0 | PT | C | 12 | TR | ME | 230 | 11 | BILL 10 | B10 | S2 | 2F | R00 | ACF07 | 230 | 2n | MEP |  |  |  |  |  |  |  |
| T12TR26007C0 |  | PT-12 ; 2nd Fix, Cable Pulling (TR RM) | 36d | 2012-03-04 | 2012-04-15 | T12TR09203C0, T12TR09205C0 |  |  |  |  | 60.56d | 42d | ELECTRICAL [2683.2 h]; Cost |  |  | T12TR26007C0 | PT | C | 12 | TR | ME | 260 | 07 | BILL 10 | B10 | S2 | 2F | R00 | ACF07 | 260 | 2n | MEP |  |  |  |  |  |  |  |
| T12TR26009C0 |  | PT-12 ; 2nd Fix, Inst of Equipment (DB, TR, SG,BUS) (TR RM) | 54d | 2012-03-04 | 2012-05-06 | T12TR09205C0 |  |  |  |  | 24.56d | 0d | ELECTRICAL [3943.2 h]; Cost |  |  | T12TR26009C0 | PT | C | 12 | TR | ME | 260 | 09 | BILL 10 | B10 | S2 | 2F | R00 | ACF04 | 260 | 2n | MEP |  |  |  |  |  | E |  |
| T12TR26027C0 |  | PT-12 ; 2nd Fix, Wiring / Cabling (TR RM) | 30d | 2012-03-04 | 2012-04-08 | T12TR09203C0, T12TR09205C0 |  |  |  |  | 78.56d | 60d | ELECTRICAL [392.4 h]; Cost | 417 | 1318 | T12TR26027C0 | PT | C | 12 | TR | ME | 260 | 27 | BILL 10 | B10 | S2 | 2F | R00 | ACF07 | 260 | 2n | MEP |  |  |  |  |  |  |  |
| T12TR09501C0 |  | PT-12 ; Ceiling Grid and Service Tile (TR RM) | 24d | 2012-03-25 | 2012-04-22 | T12TR09205C0 SS+15d, T12TR09901C0 |  |  |  |  | 30.56d | 0d | CEILING GRID FOR GYPSUM [297.07 h]; CEILING GRID FOR GYPSUM [25.26 m2]; Cost | 336 | 1327 | T12TR09501C0 | PT | C | 12 | TR | CE | 095 | 01 | BILL 10 | B10 | S2 | 01 | R00 | ACF06 | 095 |  |  |  |  |  |  |  |  | 1 |
| T12TR09903C0 |  | PT-12 ; Wall - Final Paint (TR RM) | 12d | 2012-03-25 | 2012-04-08 | T12TR09901C0 |  |  |  |  | 118.31d | 99.75d | WALL PAINT [20 h]; WALL PAINT [24 m2]; Cost | 361 | 1312 | T12TR09903C0 | PT | C | 12 | TR | PA | 099 | 03 | BILL 10 | B10 | S2 | 02 | R00 | ACF06 | 099 |  |  |  |  |  |  |  |  |  |
| T12TR23013C0 |  | PT-12 ; 2nd Fix, Insulation of CHW pipe & Duct (TR RM) | 42d | 2012-04-15 | 2012-06-03 | T12TR23009C0, T12TR23011C0 |  |  |  |  | 18.56d | 0d | MECHANICAL [3064.8 h]; Cost |  |  | T12TR23013C0 | PT | C | 12 | TR | ME | 230 | 13 | BILL 10 | B10 | S2 | 2F | R00 | ACF07 | 230 | 2n | MEP |  |  |  |  |  |  |  |
| T12TR09601C0 |  | PT-12 ; Floor Finishes (TR RM) | 18d | 2012-04-22 | 2012-05-13 | T12TR09501C0 |  |  |  |  | 30.56d | 0d | ASSORTED FLOOR FINISH [1248 h]; ASSORTED FLOOR FINISH [693 m2]; Cost | 359 | 20001120 | T12TR09601C0 | PT | C | 12 | TR | FF | 096 | 01 | BILL 10 | B10 | S2 | 01 | R00 | ACF06 | FF |  |  |  |  |  |  |  |  |  |
| T12TR09905C0 |  | PT-12 ; Ceiling Prime & 1st coat (TR RM) | 17.88d | 2012-04-22 | 2012-05-13 | T12TR09501C0 |  |  |  |  | 76.56d | 42.12d | CEILING PAINT [4 h]; CEILING PAINT [3 m2]; Cost | 362 | 1313 | T12TR09905C0 | PT | C | 12 | TR | PA | 099 | 05 | BILL 10 | B10 | S2 | 01 | R00 | ACF06 | 099 |  |  |  |  |  |  |  |  |  |
| T12TR23003C0 |  | PT-12 ; Final Fix, Inst of Grilles & Diffusers (TR RM) | 30d | 2012-04-22 | 2012-05-27 | T12TR09501C0 |  |  |  |  | 36.56d | 18d | MECHANICAL [1498.8 h]; Cost |  |  | T12TR23003C0 | PT | C | 12 | TR | ME | 230 | 03 | BILL 10 | B10 | S2 | FF | R00 | ACF07 | 230 | FF | MEP |  |  |  |  |  |  |  |
| T12TR23023C0 |  | PT-12 ; 2nd Fix, Flexible ducts (TR RM) | 30d | 2012-04-22 | 2012-05-27 | T12TR09205C0, T12TR09501C0 |  |  |  |  | 36.56d | 18d | MECHANICAL [30 h]; Cost | 412 | 20001140 | T12TR23023C0 | PT | C | 12 | TR | ME | 230 | 23 | BILL 10 | B10 | S2 | 2F | R00 | ACF07 | 230 | 2n | MEP |  |  |  |  |  |  |  |
| T12TR23074C0 |  | PT-12 ; Final Fix, Grilles, panels & diffusers (TR RM) | 30d | 2012-04-22 | 2012-05-27 | T12TR09501C0 |  |  |  |  | 36.56d | 18d | MECHANICAL [1498.8 h]; Cost | 419 | 20001160 | T12TR23074C0 | PT | C | 12 | TR | ME | 230 | 74 | BILL 10 | B10 | S2 | FF | R00 | ACF07 | 230 | FF | MEP |  |  |  |  |  |  |  |
| T12TR26005C0 |  | PT-12 ; 2nd Fix, Wiring for Power/Lighting/Emergency (TR RM) | 30d | 2012-04-22 | 2012-05-27 | T12TR09205C0, T12TR26026C0, T12TR09501C0 |  |  |  |  | 36.56d | 18d | ELECTRICAL [392.4 h]; Cost |  |  | T12TR26005C0 | PT | C | 12 | TR | ME | 260 | 05 | BILL 10 | B10 | S2 | 2F | R00 | ACF07 | 260 | 2n | MEP |  |  |  |  |  |  |  |
| T12TR26015C0 |  | PT-12 ; Final Fix, Inst of Ceiling rose (TR RM) | 30d | 2012-04-22 | 2012-05-27 | T12TR09501C0 |  |  |  |  | 30.56d | 0d | ELECTRICAL [61.2 h]; Cost |  |  | T12TR26015C0 | PT | C | 12 | TR | ME | 260 | 15 | BILL 10 | B10 | S2 | FF | R00 | ACF07 | 260 | FF | MEP |  |  |  |  |  |  |  |
| T12TR26019C0 |  | PT-12 ; Final Fix, Inst of Light fittings (TR RM) | 36d | 2012-04-22 | 2012-06-03 | T12TR26015C0 SS, T12TR09501C0 |  |  |  |  | 30.56d | 12d | ELECTRICAL [7815.6 h]; Cost |  |  | T12TR26019C0 | PT | C | 12 | TR | ME | 260 | 19 | BILL 10 | B10 | S2 | FF | R00 | ACF07 | 260 | FF | MEP |  |  |  |  |  |  |  |
| T12TR26076C0 |  | PT-12 ; Final Fix, Lighting fittings (TR RM) | 36d | 2012-04-22 | 2012-06-03 | T12TR09501C0 |  |  |  |  | 30.56d | 12d | ELECTRICAL [7815.6 h]; Cost | 420 | 20001170 | T12TR26076C0 | PT | C | 12 | TR | ME | 260 | 76 | BILL 10 | B10 | S2 | FF | R00 | ACF07 | 260 | FF | MEP |  |  |  |  |  |  |  |
| T12TR27002C0 |  | PT-12 ; 2nd Fix, Dressing of ELV panels (TR RM) | 30d | 2012-04-22 | 2012-05-27 | T12TR09205C0, T12TR27020C0 SS |  |  |  |  | 60.56d | 42d | ELECTRICAL [273.6 h]; Cost |  |  | T12TR27002C0 | PT | C | 12 | TR | ME | 270 | 02 | BILL 10 | B10 | S2 | 2F | R00 | ACF07 | 270 | 2n | MEP |  |  |  |  |  |  |  |
| T12TR27020C0 |  | PT-12 ; 2nd Fix, Inst of ELV Equipment (Panels) (TR RM) | 48d | 2012-04-22 | 2012-06-18 | T12TR09205C0, T12TR09501C0 |  |  |  |  | 60.56d | 0d | ELECTRICAL [1819.2 h]; Cost |  |  | T12TR27020C0 | PT | C | 12 | TR | ME | 270 | 20 | BILL 10 | B10 | S2 | 2F | R00 | ACF04 | 270 | 2n | MEP |  |  |  |  |  | E |  |
| T12TR27030C0 |  | PT-12 ; Final Fix, Inst of ELV device (Detector/Speaker) (TR RM) | 36d | 2012-04-22 | 2012-06-03 | T12TR09501C0 |  |  |  |  | 30.56d | 12d | ELECTRICAL [3571.2 h]; Cost |  |  | T12TR27030C0 | PT | C | 12 | TR | ME | 270 | 30 | BILL 10 | B10 | S2 | FF | R00 | ACF07 | 270 | FF | MEP |  |  |  |  |  |  |  |
| T12TR26013C0 |  | PT-12 ; Final Fix, Termination & Gladding of Cables (TR RM) | 30d | 2012-05-06 | 2012-06-10 | T12TR26009C0, T12TR09501C0 |  |  |  |  | 24.56d | 6d | ELECTRICAL [148.8 h]; Cost |  |  | T12TR26013C0 | PT | C | 12 | TR | ME | 260 | 13 | BILL 10 | B10 | S2 | FF | R00 | ACF07 | 260 | FF | MEP |  |  |  |  |  |  |  |
| T12TR08105C0 |  | PT-12 ; Doors (TR RM) | 18d | 2012-05-13 | 2012-06-03 | T12TR08101C0, T12TR09501C0, T12TR09601C0, T12TR09901C0 |  |  |  |  | 54.31d | 0d | ASSORTED DOORS [40 h]; ASSORTED DOORS [4 no]; Cost | 317 | 1325 | T12TR08105C0 | PT | C | 12 | TR | DO | 081 | 05 | BILL 10 | B10 | S2 | DR | R00 | ACF06 | 081 |  |  | 08 |  |  |  |  |  |  |
| T12TR21115C0 |  | PT-12 ; 2nd Fix, Gaseous Fire Suppression (TR RM) | 18d | 2012-05-13 | 2012-06-03 | T12TR09601C0 |  |  |  |  | 30.56d | 12d | MECHANICAL [2626.8 h]; Cost | 411 | 20001130 | T12TR21115C0 | PT | C | 12 | TR | ME | 211 | 15 | BILL 10 | B10 | S2 | 2F | R00 | ACF07 | 211 | 2n | MEP |  |  |  |  |  |  |  |
| T12TR01006C0 |  | PT-12 ; 2nd, Ceiling Inspection by Consultants (TR RM) | 12d | 2012-06-03 | 2012-06-18 | T12TR23009C0, T12TR23011C0, T12TR23013C0, T12TR26007C0, T12TR09501C0 |  |  |  |  | 18.56d | 0d | Labor General [1.2 h]; Cost |  |  | T12TR01006C0 | PT | C | 12 | TR | ME | 010 | 06 | BILL 10 | B10 | S2 | CI | R00 | ACF07 | 010 | 2n | MEP |  |  |  |  |  |  |  |
| T12TR08709C0 |  | PT-12 ; Ironmongery (TR RM) | 16d | 2012-06-03 | 2012-06-23 | T12TR08105C0 |  |  |  |  | 54.31d | 35.75d | IRONMONGERY [50 h]; IRONMONGERY [5 no]; Cost | 322 | 20001100 | T12TR08709C0 | PT | C | 12 | TR | DO | 087 | 09 | BILL 10 | B10 | S2 | IM | R00 | ACF06 | 087 |  |  | 08 |  |  |  |  |  |  |
| T12TR09503C0 |  | PT-12 ; Ceiling closure (TR RM) | 12d | 2012-06-18 | 2012-07-02 | T12TR01006C0, T12TR09501C0, T12TR21115C0, T12TR26005C0, T12TR26007C0, T12TR26026C0, T12TR26027C0, T12TR23074C0, T12TR23003C0, T12TR26076C0, T12TR26015C0, T12TR26013C0, T12TR26019C0, T12TR27030C0, T12TR23023C0 |  |  |  |  | 18.56d | 0d | ASSORTED CEILING FINISH [33.21 h]; CEILING GYPSUM [8.2 h]; ASSORTED CEILING FINISH [54 m2]; CEILING GYPSUM [25 m2]; Cost | 337 | 20001080 | T12TR09503C0 | PT | C | 12 | TR | CE | 095 | 03 | BILL 10 | B10 | S2 | 02 | R00 | ACF06 | 095 |  |  |  |  |  |  |  |  |  |
| T12TR09907C0 |  | PT-12 ; Ceiling - Final paint (TR RM) | 11.88d | 2012-07-02 | 2012-07-16 | T12TR09905C0, T12TR09503C0 |  |  |  |  | 34.44d | 15.88d | CEILING PAINT [2 h]; CEILING PAINT [1 m2]; Cost | 363 | 1314 | T12TR09907C0 | PT | C | 12 | TR | PA | 099 | 07 | BILL 10 | B10 | S2 | 02 | R00 | ACF06 | 099 |  |  |  |  |  |  |  |  |  |
| T12TR26017C0 |  | PT-12 ; Final Fix, Inst of Switch/Sockets (TR RM) | 12d | 2012-07-02 | 2012-07-16 | T12TR09901C0, T12TR09503C0 |  |  |  |  | 18.56d | 0d | ELECTRICAL [362.4 h]; Cost |  |  | T12TR26017C0 | PT | C | 12 | TR | ME | 260 | 17 | BILL 10 | B10 | S2 | FF | R00 | ACF07 | 260 | FF | MEP |  |  |  |  |  |  |  |
| T12TR01802C0 |  | PT-12 ; MEP de-snag, FIREM sign-off | 15.75d | 2012-07-16 | 2012-08-04 | T12TR26017C0, T12TR23074C0, T12TR23003C0, T12TR26076C0, T12TR26013C0, T12TR26015C0, T12TR27030C0, T12TR26019C0, T12TR27002C0 |  |  |  |  | 18.56d | 0d | TESTING & COMMISSIONING [255 h]; Cost |  |  | S05CO01851C0 | PT | C | 12 | TR | SC | 018 | 53 | BILL 10 | B10 | S2 | 01 | R00 | ACF07 | 018 |  |  |  |  |  |  |  |  |  |
| T12TR01801C0 |  | PT-12 ; Touch-up & Clean / JV inspection /CIR /De-snag | 20.75d | 2012-08-04 | 2012-08-30 | T12TR01802C0, T12TR08709C0, T12TR09601C0, T12TR09903C0, T12TR09907C0, T12TR09503C0 |  |  |  |  | 18.56d | 0d | TESTING & COMMISSIONING [64 h]; Cost | 396 |  | T12TR01851C0 | PT | C | 12 | TR | SC | 018 | 51 | BILL 10 | B10 | S2 | 02 | R00 | ACF07 | 018 |  |  |  |  |  |  |  |  |  |
| T12TR01803C0 |  | PT-12 ; Consultant's final de-snag inspection | 12d | 2012-08-30 | 2012-09-13 | T12TR01801C0 |  |  |  |  | 18.56d | 0d | Labor General [1 h]; Cost |  |  | CP3TS01803C0 | PT | C | 12 | TR | SC | 018 | 03 | BILL 10 | B10 | S1 | 03 | R00 | ACF07 | 018 |  |  |  |  |  |  |  |  |  |

| ID | WBS | Activity | Duration | Start | Finish | Predecessors | Complete | Remaining | Planned start | Planned finish | Total float | Free float | Expected finish | Resources | Cost | Actual cost | user_number8 | user_integer1 | user_integer2 | user_number7 | change id | July2011 Target% Complete | Claimed This Month | P_811 | P_711 | CCAD BUILDING(SET) | CCAD PHASE(SET) | CCAD FLOOR(SET) | CCAD ZONE(SET) | CCAD WORK(SET) | CCAD SECTION(SET) | CCAD SERIAL No.(SET) | CCAD SUB ZONE MEP(SET) | CCAD CBS(SET) | CCAD BILL(SET) | CCAD HANDOVER(SET) | CCAD TAG(SET) | CCAD REV(SET) | CCADACF (SET) | CCAD CSA | CCAD SSCF | Act Selector % | Change Order # | NEW ACTIVITY ID | U% | R3 Partitions | CCAD DIVISION(SET) | CCAD MEQ | R3 Finish |
| --- | --- | --- | --- | --- | --- | --- | --- | --- | --- | --- | --- | --- | --- | --- | --- | --- | --- | --- | --- | --- | --- | --- | --- | --- | --- | --- | --- | --- | --- | --- | --- | --- | --- | --- | --- | --- | --- | --- | --- | --- | --- | --- | --- | --- | --- | --- | --- | --- | --- |
|  | 04 | **Public Area ( Elev.Lobby & Corridors )** |  | 2011-08-02 | 2013-02-12 |  |  |  |  |  |  |  |  |  |  |  |  |  |  |  |  |  |  |  |  |  |  |  |  |  |  |  |  |  |  |  |  |  |  |  |  |  |  |  |  |  |  |  |  |
| T12PA23001C0 |  | PT-12 ; 1st Fix, Inst. of Supports for MEP (Public Area) | 54d | 2011-08-02 A | 2011-10-31 | T12CO07807C0 | 50% | 26.94d | 2011-08-09 | 2011-10-13 | 18.56d | 0d |  | MECHANICAL [4027.2 h]; Cost [45150.4 AED] | 45,150.38 | 22,575.19 | 0 | 0 | 0 | 0 | S08PA23001C0 | 25 | 13171.63 | 10 | 0 | PT | C | 12 | PA | ME | 230 | 01 | 1S | BILL 10 | B10 | S2 | 1F | R00 | ACF04 | MEP | 230 | M1F |  |  |  |  |  |  |  |
| T12PA09201C0 |  | PT-12 ; Metal Studs (Public Area) | 48d | 2011-08-10 A | 2011-11-12 | T12PA23001C0 SS+12d, TAFCI09202R02 FS+65d, T12PA23001C0 FF | 80% | 9.6d | 2011-12-06 | 2012-01-31 | 38.1d | 0d |  | PARTITIONS [5687 h]; PARTITIONS - Metal Studs [789 m]; Cost |  |  | 0 | 0 | 0 | 0 | S08PA09201C0 |  |  | 20 | 0 | PT | C | 12 | PA | PT | 092 | 01 |  | BILL 10 | B10 | S2 | 1F | R00 | ACF06 | GP | 092 | PMS | 313 | 944 | 80 | R3 |  |  |  |
| T12PA09203C0 |  | PT-12 ; Partitions early wall & 1st face (Public Area) | 33d | 2011-08-10 A | 2011-12-13 | T12PA09201C0 | 25% | 24.75d | 2011-12-20 | 2012-01-28 | 57.15d | 38.59d |  | PARTITIONS [789 m]; PARTITIONS [4449 h]; Cost |  |  | 0 | 0 | 0 | 0 | S08PA09203C0 |  |  | 20 | 0 | PT | C | 12 | PA | PT | 092 | 03 |  | BILL 10 | B10 | S2 | 2F | R00 | ACF06 | GP | 092 | P1F | 314 | 945 |  |  |  |  |  |
| T12PA22011C0 |  | PT-12 ; 2nd Fix, Drainage/Water pipe (wall) (Public Area) | 42d | 2011-09-05 A | 2011-12-28 | T12PA09201C0 | 10% | 37.8d | 2011-10-25 | 2011-12-18 | 38.1d | 0d |  | PLUMBING [1378.8 h]; Cost [74493.8 AED] | 74,493.83 | 7,449.38 |  |  |  |  | S08PA22011C0 |  |  |  |  | PT | C | 12 | PA | ME | 220 | 11 | 2n | BILL 10 | B10 | S2 | 2F | R00 | ACF07 | MEP | 220 |  |  |  |  |  |  |  |  |
| T12PA22019C0 |  | PT-12 ; 1st Fix, Inst of Drainage pipe (ceiling) (Public Area) | 54d | 2011-09-05 A | 2012-01-18 | T12PA23001C0, T12PA26013C0 SS+14d | 5% | 51.3d | 2011-12-17 | 2012-02-20 | 18.56d | 0d |  | PLUMBING [2326.8 h]; Cost [74493.8 AED] | 74,493.83 | 3,724.69 |  |  |  |  | S08PA22019C0 |  |  |  |  | PT | C | 12 | PA | ME | 220 | 19 | 1S | BILL 10 | B10 | S2 | 1F | R00 | ACF04 | MEP | 220 | M1F |  |  |  |  |  |  |  |
| T12PA26001C0 |  | PT-12 ; 1st Fix, Inst of Trunking/Conduiting (Public Area) | 60d | 2011-09-05 A | 2012-01-09 | T12CO07807C0, T12PA23001C0 | 10% | 54d | 2011-10-27 | 2012-01-12 | 18.56d | 0d |  | ELECTRICAL [4268.4 h]; Cost [37790.1 AED] | 37,790.1 | 3,779.01 |  |  |  |  | S08PA26001C0 | 25 |  |  |  | PT | C | 12 | PA | ME | 260 | 01 | 1S | BILL 10 | B10 | S2 | 1F | R00 | ACF04 | MEP | 260 | M1F |  |  |  |  |  |  |  |
| T12PA26007C0 |  | PT-12 ; 2nd Fix, Cable Pulling (Public Area) | 48d | 2011-09-05 A | 2011-12-24 | T12PA09201C0 SS+6d | 10% | 43.2d | 2011-10-25 | 2011-12-25 | 42.3d | 4.2d |  | ELECTRICAL [2683.2 h]; Cost [134522 AED] | 134,521.96 | 13,452.2 |  |  |  |  | S08PA26007C0 |  |  |  |  | PT | C | 12 | PA | ME | 260 | 07 | 2n | BILL 10 | B10 | S2 | 2F | R00 | ACF07 | MEP | 260 |  |  |  |  |  |  |  |  |
| T12PA26009C0 |  | PT-12 ; 2nd Fix, Inst of Wall conduites (Public Area) | 42d | 2011-09-05 A | 2011-12-28 | T12PA09201C0 | 10% | 37.8d | 2011-10-25 | 2011-12-18 | 38.1d | 0d |  | ELECTRICAL [734.4 h]; Cost [37790.1 AED] | 37,790.1 | 3,779.01 |  |  |  |  | S08PA26009C0 | 10 | 4438.43 |  |  | PT | C | 12 | PA | ME | 260 | 09 | 2n | BILL 10 | B10 | S2 | 2F | R00 | ACF07 | MEP | 260 |  |  |  |  |  |  |  |  |
| T12PA26013C0 |  | PT-12 ; 1st Fix, Inst of Cable Tray (Public Area) | 48d | 2011-09-05 A | 2012-01-09 | T12CO07807C0, T12PA23001C0, T12PA27010C0 SS+10d | 10% | 43.2d | 2011-11-29 | 2012-01-26 | 18.56d | 0d |  | ELECTRICAL [399.6 h]; Cost [21571.3 AED] | 21,571.27 | 2,157.13 |  |  |  |  | S08PA26013C0 |  |  |  |  | PT | C | 12 | PA | ME | 260 | 13 | 1S | BILL 10 | B10 | S2 | 1F | R00 | ACF04 | MEP | 260 | M1F |  |  |  |  |  |  |  |
| T12PA27010C0 |  | PT-12 ; 1st Fix, Inst of Trunking for ELV system (Public Area) | 54d | 2011-10-31 | 2012-01-09 | T12CO07807C0, T12PA23001C0, T12PA26001C0 SS+14d |  |  |  |  | 18.56d | 0d |  | ELECTRICAL [3202.8 h]; Cost |  |  |  |  |  |  | S08PA27010C0 |  |  |  |  | PT | C | 12 | PA | ME | 270 | 10 | 1S | BILL 10 | B10 | S2 | 1F | R00 | ACF04 | MEP | 270 | M1F |  |  |  |  |  |  |  |
| T12PA22005C0 |  | PT-12 ; 1st Fix, Inst of Water supply pipe (ceiling) (Public Area) | 60d | 2011-11-15 | 2012-01-28 | T12PA22019C0 SS+10d, T12PA23001C0 |  |  |  |  | 18.56d | 0d |  | PLUMBING [4548 h]; Cost |  |  |  |  |  |  | S08PA22005C0 |  |  |  |  | PT | C | 12 | PA | ME | 220 | 05 | 1S | BILL 10 | B10 | S2 | 1F | R00 | ACF04 | MEP | 220 | M1F |  |  |  |  |  |  |  |
| T12PA21111C0 |  | PT-12 ; 1st Fix, Inst of Sprinkler main pipe (Public Area) | 48d | 2011-11-30 | 2012-01-28 | T12PA22005C0 SS+12d, T12PA23001C0 |  |  |  |  | 29.81d | 0d |  | MECHANICAL [1236 h]; Cost |  |  |  |  |  |  | S08PA21111C0 |  |  |  |  | PT | C | 12 | PA | ME | 211 | 11 | 1S | BILL 10 | B10 | S2 | 1F | R00 | ACF04 | MEP | 211 | M1F |  |  |  |  |  |  |  |
| T12PA23017C0 |  | PT-12 ; 1st Fix, Inst of CHW pipe (Public Area) | 54d | 2011-12-18 | 2012-02-21 | T12PA21111C0 SS+14d, T12PA23001C0 |  |  |  |  | 29.81d | 0d |  | MECHANICAL [2467.2 h]; Cost |  |  |  |  |  |  | S08PA23017C0 |  |  |  |  | PT | C | 12 | PA | ME | 230 | 17 | 1S | BILL 10 | B10 | S2 | 1F | R00 | ACF04 | MEP | 230 | M1F |  |  |  |  |  |  |  |
| T12PA08103C0 |  | PT-12 ; Door Frames (Public Area) | 36d | 2011-12-28 | 2012-02-09 | T12PA09201C0, GNHE08101C0 FS+126d |  |  |  |  | 40.5d | 0d |  | ASSORTED DOORS [448 h]; Cost |  |  |  |  |  |  | S08PA08103C0 |  |  |  |  | PT | C | 12 | PA | DO | 081 | 03 |  | BILL 10 | B10 | S2 | DF | R00 | ACF06 |  | 081 |  | 316 | 947 |  |  | 08 |  |  |
| T12PA01005C0 |  | PT-12 ; 2nd, Wall Inspection by Consultant (Public Area) | 6d | 2011-12-28 | 2012-01-05 | T12PA22011C0, T12PA26007C0, T12PA26009C0 |  |  |  |  | 38.1d | 19.54d |  | Labor General [1.2 h]; Cost |  |  |  |  |  |  | S08PA01005C0 |  |  |  |  | PT | C | 12 | PA | ME | 010 | 05 | 2n | BILL 10 | B10 | S2 | WI | R00 | ACF07 | MEP | 010 |  |  |  |  |  |  |  |  |
| T12PA23023C0 |  | PT-12 ; 1st Fix, Inst of Main Ducting (Public Area) | 60d | 2011-12-29 | 2012-03-11 | T12PA23001C0, T12PA23017C0 SS+10d |  |  |  |  | 55.81d | 0d |  | MECHANICAL [8022 h]; Cost |  |  |  |  |  |  | S08PA23023C0 |  |  |  |  | PT | C | 12 | PA | ME | 230 | 23 | 1S | BILL 10 | B10 | S2 | 1F | R00 | ACF04 | MEP | 230 | M1F |  |  |  |  |  |  |  |
| T12PA27001C0 |  | PT-12 ; 1st Fix, Wiring/ Cabling work (Public Area) | 48d | 2012-01-09 | 2012-03-06 | T12PA26001C0, T12PA26013C0, T12PA27010C0 |  |  |  |  | 107.81d | 78d |  | ELECTRICAL [392.4 h]; Cost |  |  |  |  |  |  | S08PA27001C0 |  |  |  |  | PT | C | 12 | PA | ME | 270 | 01 | 1S | BILL 10 | B10 | S2 | 1F | R00 | ACF04 | MEP | 270 | M1F |  |  |  |  |  |  |  |
| T12PA09205C0 |  | PT-12 ; Partitions Closing (Public Area) | 36d | 2012-01-28 | 2012-03-11 | T12PA01005C0, T12PA09203C0, T12PA22005C0, T12PA22019C0, TAFOA09214C1 FF, TAFCI22011R02 FS+65d, T12PA08103C0 FF |  |  |  |  | 18.56d | 0d |  | PARTITIONS [789 m]; PARTITIONS [5697 h]; Cost |  |  |  |  |  |  | S08PA09205C0 |  |  |  |  | PT | C | 12 | PA | PT | 092 | 05 |  | BILL 10 | B10 | S2 | FF | R00 | ACF06 | GP | 092 | P2F | 315 | 946 |  | R3 |  |  |  |
| T12PA21117C0 |  | PT-12 ; 1st Fix, Inst of Sprinkler branch pipe (Public Area) | 48d | 2012-01-28 | 2012-03-25 | T12PA09201C0, T12PA21111C0 |  |  |  |  | 91.81d | 62d |  | MECHANICAL [561.6 h]; Cost |  |  |  |  |  |  | S08PA21117C0 |  |  |  |  | PT | C | 12 | PA | ME | 211 | 17 | 1S | BILL 10 | B10 | S2 | 1F | R00 | ACF04 | MEP | 211 | M1F |  |  |  |  |  |  |  |
| T12PA23009C0 |  | PT-12 ; 2nd Fix, Inst of VAV'S CHW connection (Public Area) | 42d | 2012-02-21 | 2012-04-10 | T12PA23017C0 |  |  |  |  | 29.81d | 0d |  | MECHANICAL [1450.8 h]; Cost |  |  |  |  |  |  | S08PA23009C0 |  |  |  |  | PT | C | 12 | PA | ME | 230 | 09 | 2n | BILL 10 | B10 | S2 | 2F | R00 | ACF07 | MEP | 230 |  |  |  |  |  |  |  |  |
| T12PA09901C0 |  | PT-12 ; Wall Prime & 1st coat (Public Area) | 30d | 2012-03-11 | 2012-04-15 | T12PA09205C0 |  |  |  |  | 73.81d | 0d |  | WALL PAINT [866 h]; WALL PAINT [1080 m2]; Cost |  |  |  |  |  |  | S08PA09901C0 |  |  |  |  | PT | C | 12 | PA | PA | 099 | 01 |  | BILL 10 | B10 | S2 | 01 | R00 | ACF06 |  | 099 |  | 328 | 956 |  |  |  |  |  |
| T12PA23008C0 |  | PT-12 ; 1st Fix, Inst of VCD's/FD's (Public Area) | 48d | 2012-03-11 | 2012-05-06 | T12PA23023C0 |  |  |  |  | 55.81d | 26d |  | MECHANICAL [1753.2 h]; Cost |  |  |  |  |  |  | S08PA23008C0 |  |  |  |  | PT | C | 12 | PA | ME | 230 | 08 | 1S | BILL 10 | B10 | S2 | 1F | R00 | ACF04 | MEP | 230 | M1F |  |  |  |  |  |  |  |
| T12PA26005C0 |  | PT-12 ; 2nd Fix, Wiring for Power/Lighting/Emergency (Public Area) | 42d | 2012-03-11 | 2012-04-29 | T12PA09205C0 |  |  |  |  | 133.81d | 0d |  | ELECTRICAL [392.4 h]; Cost |  |  |  |  |  |  | S08PA26005C0 |  |  |  |  | PT | C | 12 | PA | ME | 260 | 05 | 2n | BILL 10 | B10 | S2 | 2F | R00 | ACF07 | MEP | 260 |  |  |  |  |  |  |  |  |
| T12PA26011C0 |  | PT-12 ; 2nd Fix, Inst of Equipment (DB) (Public Area) | 54d | 2012-03-11 | 2012-05-13 | T12PA09205C0 |  |  |  |  | 158.06d | 110d |  | ELECTRICAL [878.4 h]; Cost |  |  |  |  |  |  | S08PA26011C0 |  |  |  |  | PT | C | 12 | PA | ME | 260 | 11 | 2n | BILL 10 | B10 | S2 | 2F | R00 | ACF04 | MEP | 260 |  |  |  |  |  |  | E |  |
| T12PA26053C0 |  | PT-12 ; 2nd Fix, Wiring / Cabling (Public Area) | 42d | 2012-03-11 | 2012-04-29 | T12PA09203C0, T12PA09205C0 |  |  |  |  | 85.81d | 56d |  | ELECTRICAL [392.4 h]; Cost |  |  |  |  |  |  | S08PA26053C0 |  |  |  |  | PT | C | 12 | PA | ME | 260 | 53 | 2n | BILL 10 | B10 | S2 | 2F | R00 | ACF07 | MEP | 260 |  | 389 | 977 |  |  |  |  |  |
| T12PA23015C0 |  | PT-12 ; 2nd Fix, Insulation of CHW pipe & Duct (Public Area) | 48d | 2012-04-10 | 2012-06-05 | T12PA23009C0, T12PA23017C0, T12PA23023C0 |  |  |  |  | 29.81d | 0d |  | MECHANICAL [3064.8 h]; Cost |  |  |  |  |  |  | S08PA23015C0 |  |  |  |  | PT | C | 12 | PA | ME | 230 | 15 | 2n | BILL 10 | B10 | S2 | 2F | R00 | ACF07 | MEP | 230 |  |  |  |  |  |  |  |  |
| T12PA05501C0 |  | PT-12 ; Handrails & balustrade (Public Area) | 36d | 2012-04-15 | 2012-05-27 | T12PA09901C0, TAFT105509C0, TAFT805509C0 |  |  |  |  | 104.06d | 32d |  | SECONDARY STEEL [356 h]; Cost |  |  |  |  |  |  | S08PA05501C0 |  |  |  |  | PT | C | 12 | PA | SW | 055 | 01 |  | BILL 10 | B10 | S2 | 01 | R00 | ACF03 |  | a |  |  |  |  |  |  |  |  |
| T12PA26015C0 |  | PT-12 ; Final Fix, Termination & Gladding of Cables (Public Area) | 36d | 2012-04-29 | 2012-06-10 | T12PA26005C0 |  |  |  |  | 133.81d | 104d |  | ELECTRICAL [148.8 h]; Cost |  |  |  |  |  |  | S08PA26015C0 |  |  |  |  | PT | C | 12 | PA | ME | 260 | 15 | FF | BILL 10 | B10 | S2 | FF | R00 | ACF07 | MEP | 260 |  |  |  |  |  |  |  |  |
| T12PA09501C0 |  | PT-12 ; Ceiling Grid and Service Tile (Public Area) | 24d | 2012-06-05 | 2012-07-04 | T12PA09205C0 SS+15d, T12PA21117C0, T12PA23008C0, T12PA23009C0, T12PA23015C0, T12PA27001C0, TAFCI22022R02 FS+65d, T12PA26053C0 FF, T12PA09901C0 |  |  |  |  | 29.81d | 0d |  | CEILING GRID FOR GYPSUM [7543.63 h]; CEILING GRID FOR GYPSUM [645.55 m2]; Cost |  |  |  |  |  |  | S08PA09501C0 |  |  |  |  | PT | C | 12 | PA | CE | 095 | 01 |  | BILL 10 | B10 | S2 | 01 | R00 | ACF06 |  | 095 |  | 323 | 952 |  |  |  |  | R3 |
| T12PA09601C0 |  | PT-12 ; Flooring (Rubber & etc) (Public Area) | 30d | 2012-07-04 | 2012-08-08 | TAFCI22022R02 FS+65d, T12PA09501C0, T12PA05501C0 |  |  |  |  | 72.06d | 0d |  | RUBBER FLOOR [48 h]; RUBBER FLOOR [120 m2]; Cost |  |  |  |  |  |  | S08PA09601C0 |  |  |  |  | PT | C | 12 | PA | FF | 096 | 01 |  | BILL 10 | B10 | S2 | 03 | R00 | ACF06 |  | RF |  | 326 | 955 |  |  |  |  | R3 |
| T12PA09602C0 |  | PT-12 ; Flooring (Stone) (Public Area) | 30d | 2012-07-04 | 2012-08-08 | TAFCI22022R02 FS+65d, T12PA09501C0 |  |  |  |  | 72.06d | 0d |  | STONE FLOOR [27 m2]; STONE FLOOR [24 h]; Cost |  |  |  |  |  |  | S08PA09601C0 |  |  |  |  | PT | C | 12 | PA | FF | 096 | 01 |  | BILL 10 | B10 | S2 | 09 | R00 | ACF06 |  | ST |  | 326 | 955 |  |  |  |  | R3 |
| T12PA09905C0 |  | PT-12 ; Ceiling Prime & 1st coat (Public Area) | 30d | 2012-07-04 | 2012-08-08 | T12PA09501C0 |  |  |  |  | 114.06d | 0d |  | CEILING PAINT [55 h]; CEILING PAINT [67 m2]; Cost |  |  |  |  |  |  | S08PA09905C0 |  |  |  |  | PT | C | 12 | PA | PA | 099 | 05 |  | BILL 10 | B10 | S2 | 01 | R00 | ACF06 |  | 099 |  | 330 | 958 |  |  |  |  |  |
| T12PA21115C0 |  | PT-12 ; 2nd Fix, Inst of Sprinkler droppers (Public Area) | 42d | 2012-07-04 | 2012-08-25 | T12PA09501C0 |  |  |  |  | 35.81d | 0d |  | MECHANICAL [1602 h]; Cost |  |  |  |  |  |  | S08PA21115C0 |  |  |  |  | PT | C | 12 | PA | ME | 211 | 15 | 2n | BILL 10 | B10 | S2 | 2F | R00 | ACF07 | MEP | 211 |  |  |  |  |  |  |  |  |
| T12PA23021C0 |  | PT-12 ; 2nd Fix, Inst of Flexible Duct & Plenum boxes (Public Area) | 42d | 2012-07-04 | 2012-08-25 | T12PA09205C0, T12PA09501C0 |  |  |  |  | 35.81d | 0d |  | MECHANICAL [30 h]; Cost |  |  |  |  |  |  | S08PA23021C0 |  |  |  |  | PT | C | 12 | PA | ME | 230 | 21 | 2n | BILL 10 | B10 | S2 | 2F | R00 | ACF07 | MEP | 230 |  |  |  |  |  |  |  |  |
| T12PA26017C0 |  | PT-12 ; Final Fix, Inst of Ceiling rose (Public Area) | 36d | 2012-07-04 | 2012-08-15 | T12PA09501C0 |  |  |  |  | 29.81d | 0d |  | ELECTRICAL [61.2 h]; Cost |  |  |  |  |  |  | S08PA26017C0 |  |  |  |  | PT | C | 12 | PA | ME | 260 | 17 | FF | BILL 10 | B10 | S2 | FF | R00 | ACF07 | MEP | 260 |  |  |  |  |  |  |  |  |
| T12PA27002C0 |  | PT-12 ; 2nd Fix, Wiring Droppers (Public Area) | 42d | 2012-07-04 | 2012-08-25 | T12PA09501C0 |  |  |  |  | 29.81d | 0d |  | ELECTRICAL [392.4 h]; Cost |  |  |  |  |  |  | S08PA27002C0 |  |  |  |  | PT | C | 12 | PA | ME | 270 | 02 | 2n | BILL 10 | B10 | S2 | 2F | R00 | ACF07 | MEP | 270 |  |  |  |  |  |  |  |  |
| T12PA27020C0 |  | PT-12 ; 2nd Fix, Inst of ELV Equipment (Panels) (Public Area) | 66d | 2012-07-04 | 2012-09-22 | T12PA09205C0, T12PA09501C0 |  |  |  |  | 48.06d | 0d |  | ELECTRICAL [1819.2 h]; Cost |  |  |  |  |  |  | S08PA27020C0 |  |  |  |  | PT | C | 12 | PA | ME | 270 | 20 | 2n | BILL 10 | B10 | S2 | 2F | R00 | ACF04 | MEP | 270 |  |  |  |  |  |  | E |  |
| T12PA08107C0 |  | PT-12 ; Doors (Public Area) | 36d | 2012-08-08 | 2012-09-22 | T12PA08103C0, T12PA09501C0, T12PA09601C0, T12PA09901C0, T12PA09602C0 |  |  |  |  | 72.06d | 0d |  | ASSORTED DOORS [900 h]; ASSORTED DOORS [90 no]; Cost |  |  |  |  |  |  | S08PA08107C0 |  |  |  |  | PT | C | 12 | PA | DO | 081 | 07 |  | BILL 10 | B10 | S2 | DR | R00 | ACF06 |  | 081 |  | 317 | 948 |  |  | 08 |  |  |
| T12PA09903C0 |  | PT-12 ; Wall Final Paint (Public Area) | 30d | 2012-08-08 | 2012-09-15 | T12PA09901C0, T12PA09905C0, T12PA09501C0 |  |  |  |  | 114.06d | 72d |  | WALL PAINT [467 h]; WALL PAINT [581 m2]; Cost |  |  |  |  |  |  | S08PA09903C0 |  |  |  |  | PT | C | 12 | PA | PA | 099 | 03 |  | BILL 10 | B10 | S2 | 02 | R00 | ACF06 |  | 099 |  | 329 | 957 |  |  |  |  |  |
| T12PA26003C0 |  | PT-12 ; Final Fix, Inst of Light fittings (Public Area) | 48d | 2012-08-15 | 2012-10-13 | T12PA09501C0, T12PA26017C0 |  |  |  |  | 29.81d | 0d |  | ELECTRICAL [7815.6 h]; Cost |  |  |  |  |  |  | S08PA26003C0 |  |  |  |  | PT | C | 12 | PA | ME | 260 | 03 | FF | BILL 10 | B10 | S2 | FF | R00 | ACF07 | MEP | 260 |  |  |  |  |  |  |  |  |
| T12PA21113C0 |  | PT-12 ; Final Fix, Inst of Sprinklers head/ Extinguisher (Public Area) | 36d | 2012-08-25 | 2012-10-06 | T12PA09501C0, T12PA21115C0 |  |  |  |  | 35.81d | 6d |  | MECHANICAL [234 h]; Cost |  |  |  |  |  |  | S08PA21113C0 |  |  |  |  | PT | C | 12 | PA | ME | 211 | 13 | FF | BILL 10 | B10 | S2 | FF | R00 | ACF07 | MEP | 211 |  |  |  |  |  |  |  |  |
| T12PA23019C0 |  | PT-12 ; Final Fix, Inst of Grilles & Diffusers (Public Area) | 36d | 2012-08-25 | 2012-10-06 | T12PA09501C0, T12PA23021C0 |  |  |  |  | 35.81d | 6d |  | MECHANICAL [1498.8 h]; Cost |  |  |  |  |  |  | S08PA23019C0 |  |  |  |  | PT | C | 12 | PA | ME | 230 | 19 | FF | BILL 10 | B10 | S2 | FF | R00 | ACF07 | MEP | 230 |  |  |  |  |  |  |  |  |
| T12PA27030C0 |  | PT-12 ; Final Fix, Inst of ELV devise (Detector/Speaker) (Public Area) | 42d | 2012-08-25 | 2012-10-13 | T12PA09501C0, T12PA27002C0 |  |  |  |  | 29.81d | 0d |  | ELECTRICAL [3571.2 h]; Cost |  |  |  |  |  |  | S08PA27030C0 |  |  |  |  | PT | C | 12 | PA | ME | 270 | 30 | FF | BILL 10 | B10 | S2 | FF | R00 | ACF07 | MEP | 270 |  |  |  |  |  |  |  |  |
| T12PA08709C0 |  | PT-12 ; Ironmongery (Public Area) | 36d | 2012-09-22 | 2012-11-05 | T12PA08107C0 |  |  |  |  | 72.06d | 42.25d |  | IRONMONGERY [1280 h]; IRONMONGERY [128 no]; Cost |  |  |  |  |  |  | S08PA08709C0 |  |  |  |  | PT | C | 12 | PA | DO | 087 | 09 |  | BILL 10 | B10 | S2 | IM | R00 | ACF06 |  | 087 |  | 322 | 951 |  |  | 08 |  |  |
| T12PA09701C0 |  | PT-12 ; Wall finishes (ST, WD, WC) (Public Area) | 36d | 2012-09-22 | 2012-11-05 | T12PA26011C0, T12PA27020C0, TVT0114211C0, TVT0214211C0, TVT0714211C0, TVT3114211C0, TVT3214255C0, TVT3314245C0, TAFCI22022R02 FS+164d, T12PA09501C0, T12PA09601C0, T12PA09602C0 |  |  |  |  | 48.06d | 0d |  | ASSORTED WALL FINISH [764 h]; ASSORTED WALL FINISH [878 m2]; Cost |  |  |  |  |  |  | S08PA09701C0 |  |  |  |  | PT | C | 12 | PA | WF | 097 | 01 |  | BILL 10 | B10 | S2 | 01 | R00 | ACF06 |  | 097 |  | 105 | 1002 |  |  |  |  |  |
| T12PA09702C0 |  | PT-12 ; Ceramic Wall Tiles (Public Area) | 6d | 2012-09-22 | 2012-09-29 | T12PA26011C0, T12PA27020C0, TVT0114211C0, TVT0214211C0, TVT0714211C0, TVT3114211C0, TVT3214255C0, TVT3314245C0, T12PA09501C0 |  |  |  |  | 102.06d | 72.25d |  | ASSORTED WALL FINISH [1049 h]; ASSORTED WALL FINISH [201 m2]; Cost |  |  |  |  |  |  | S08PA09701C0 |  |  |  |  | PT | C | 12 | PA | WF | 097 | 01 |  | BILL 10 | B10 | S2 | 04 | R00 | ACF06 |  | 097 |  | 105 | 1002 |  |  |  |  |  |
| T12PA01006C0 |  | PT-12 ; 2nd, Ceiling Inspection by Consultants (Public Area) | 6d | 2012-10-13 | 2012-10-20 | T12PA21115C0, T12PA23009C0, T12PA23015C0, T12PA27002C0, T12PA09501C0, T12PA21113C0, T12PA23019C0, T12PA26015C0, T12PA26017C0, T12PA26003C0, T12PA27030C0 |  |  |  |  | 29.81d | 0d |  | Labor General [1.2 h]; Cost |  |  |  |  |  |  | S08PA01006C0 |  |  |  |  | PT | C | 12 | PA | ME | 010 | 06 | 2n | BILL 10 | B10 | S2 | CI | R00 | ACF07 | MEP | 010 |  |  |  |  |  |  |  |  |
| T12PA09503C0 |  | PT-12 ; Ceiling closure - ACT/Gypsum (Public Area) | 25.5d | 2012-10-20 | 2012-11-22 | T12PA01006C0, T12PA21115C0, T12PA26005C0, T12PA27001C0, T12PA27002C0, TAFOA09513C1 FF, T12PA23021C0 |  |  |  |  | 29.81d | 0d |  | ASSORTED CEILING FINISH [851.77 h]; CEILING GYPSUM [211.76 h]; ASSORTED CEILING FINISH [1385 m2]; CEILING GYPSUM [646 m2]; Cost |  |  |  |  |  |  | S08PA09503C0 |  |  |  |  | PT | C | 12 | PA | CE | 095 | 03 |  | BILL 10 | B10 | S2 | 02 | R00 | ACF06 |  | 095 |  | 324 | 953 |  |  |  |  | R3 |
| T12PA11001C0 |  | PT-12 ; Wall Protection (WP, CG, WG, FCG) (Public Area) | 24d | 2012-11-05 | 2012-12-05 | T12PA09701C0, T12PA09903C0 SS |  |  |  |  | 48.06d | 18.25d |  | FF&E [42 h]; Cost |  |  |  |  |  |  | S08PA11001C0 |  |  |  |  | PT | C | 12 | PA | WF | 110 | 01 |  | BILL 10 | B10 | S2 | 03 | R00 | ACF08 |  | b |  | 326 | 1001 |  |  |  |  |  |
| T12PA11009C0 |  | PT-12 ; Signage (Public Area) | 15d | 2012-11-05 | 2012-11-24 | T12PA09701C0 |  |  |  |  | 57.06d | 27.25d |  | SIGNAGES [173 h]; SIGNAGES [172.58 no]; Cost |  |  |  |  |  |  | S08PA11009C0 |  |  |  |  | PT | C | 12 | PA | SA | 110 | 09 |  | BILL 10 | B10 | S2 | 09 | R00 | ACF08 |  | c |  | 322 | 951 |  |  | 08 |  |  |
| T12PA09907C0 |  | PT-12 ; Ceiling Final paint (Public Area) | 18d | 2012-11-22 | 2012-12-15 | T12PA09601C0, T12PA09905C0, T12PA09602C0, T12PA09503C0 |  |  |  |  | 40.56d | 10.75d |  | CEILING PAINT [29 h]; CEILING PAINT [36 m2]; Cost |  |  |  |  |  |  | S08PA09907C0 |  |  |  |  | PT | C | 12 | PA | PA | 099 | 07 |  | BILL 10 | B10 | S2 | 02 | R00 | ACF06 |  | 099 |  | 331 | 959 |  |  |  |  |  |
| T12PA26019C0 |  | PT-12 ; Final Fix, Inst of Switch/Sockets (Public Area) | 18d | 2012-11-22 | 2012-12-15 | T12PA09901C0, T12PA09503C0 |  |  |  |  | 29.81d | 0d |  | ELECTRICAL [362.4 h]; Cost |  |  |  |  |  |  | S08PA26019C0 |  |  |  |  | PT | C | 12 | PA | ME | 260 | 19 | FF | BILL 10 | B10 | S2 | FF | R00 | ACF07 | MEP | 260 |  |  |  |  |  |  |  |  |
| t18PA270 0C0 |  | PT-18 ; 1st Fix, Inst0Of Trunking for ELV0system (Public Area) | 0d |  | 2012-03-10 A |  |  |  |  |  | 0d |  | 2011-12-08 |  |  |  |  |  |  |  |  |  |  |  |  |  |  |  |  |  |  |  |  |  |  |  |  |  |  |  |  |  |  |  |  |  |  |  |  |

| ID | WBS | Activity | Duration | Start | Finish | Predecessors | Complete | Remaining | Planned start | Planned finish | Total float | Free float | Resources | Cost | Actual cost | change id | CCAD BUILDING(SET) | CCAD PHASE(SET) | CCAD FLOOR(SET) | CCAD ZONE(SET) | CCAD WORK(SET) | CCAD SECTION(SET) | CCAD SERIAL No.(SET) | CCAD CBS(SET) | CCAD BILL(SET) | CCAD HANDOVER(SET) | CCAD TAG(SET) | CCAD REV(SET) | CCADACF (SET) | CCAD SSCF | RENZ % COMPLETE | Phase | Area/ Department | Grids | Are | Weight & Nos | Process | Levels | Claimed This Month | CCAD CSA | P_811 | P_711 | U% | user_number8 | user_integer1 | user_integer2 | user_number7 | July2011 Target% Complete | CCAD SUB ZONE MEP(SET) | Act Selector % | Change Order # | NEW ACTIVITY ID | CCAD DIVISION(SET) | CCAD MEQ |
| --- | --- | --- | --- | --- | --- | --- | --- | --- | --- | --- | --- | --- | --- | --- | --- | --- | --- | --- | --- | --- | --- | --- | --- | --- | --- | --- | --- | --- | --- | --- | --- | --- | --- | --- | --- | --- | --- | --- | --- | --- | --- | --- | --- | --- | --- | --- | --- | --- | --- | --- | --- | --- | --- | --- |
|  | 10 | **Precommissioning Tesing & snagging (Public Area)** |  | 2012-12-15 | 2013-02-12 |  |  |  |  |  |  |  |  |  |  |  |  |  |  |  |  |  |  |  |  |  |  |  |  |  |  |  |  |  |  |  |  |  |  |  |  |  |  |  |  |  |  |  |  |  |  |  |  |  |
| T12TS01805C0 |  | PT-12 ; MEP de-snag, FIREM sign-off | 10.75d | 2012-12-15 | 2012-12-27 | T12PA26015C0, T12PA21113C0, T12PA23019C0, T12PA26017C0, T12PA26003C0, T12PA27030C0, T12PA26019C0 |  |  |  |  | 29.81d | 0d | TESTING & COMMISSIONING [510 h]; Cost |  |  | T12TS01801C0 | PT | C | 12 | TS | SC | 018 | 01 | BILL 10 | B10 | S2 | 01 | R00 | ACF07 | 018 |  |  |  |  |  |  |  |  |  |  |  |  |  |  |  |  |  |  |  |  |  |  |  |  |
| T12TS01808C0 |  | PT-12 ; Touch-up & Clean / JV inspection /CIR /De-snag | 18d | 2012-12-27 | 2013-01-19 | T12PA08709C0, T12PA09601C0, T12PA09701C0, T12PA09903C0, T12PA09907C0, T12PA11001C0, T12PA11009C0, T12TS01805C0, T12PA05501C0, T12PA09602C0, T12PA09702C0, T12PA09503C0 |  |  |  |  | 29.81d | 13.5d | TESTING & COMMISSIONING [128 h]; Cost |  |  | T12TS01802C0 | PT | C | 12 | TS | SC | 018 | 02 | BILL 10 | B10 | S2 | 02 | R00 | ACF07 | 018 |  |  |  |  |  |  |  |  |  |  |  |  |  |  |  |  |  |  |  |  |  |  |  |  |
| T12TS01811C0 |  | PT-12 ; Consultant's final de-snag inspection | 7d | 2013-02-04 | 2013-02-12 | T12TS01808C0, T12TS01810C0 |  |  |  |  | 16.31d | 7.31d | Labor General [1 h]; Cost |  |  | T12TS01803C0 | PT | C | 12 | TS | SC | 018 | 03 | BILL 10 | B10 | S2 | 03 | R00 | ACF07 | 018 |  |  |  |  |  |  |  |  |  |  |  |  |  |  |  |  |  |  |  |  |  |  |  |  |
|  | 13 | **Level 13** |  | 2011-02-14 | 2013-02-05 |  |  |  |  |  |  |  |  |  |  |  |  |  |  |  |  |  |  |  |  |  |  |  |  |  |  |  |  |  |  |  |  |  |  |  |  |  |  |  |  |  |  |  |  |  |  |  |  |  |
|  | 01 | **Structure & Envelopment** |  | 2011-02-14 | 2012-04-15 |  |  |  |  |  |  |  |  |  |  |  |  |  |  |  |  |  |  |  |  |  |  |  |  |  |  |  |  |  |  |  |  |  |  |  |  |  |  |  |  |  |  |  |  |  |  |  |  |  |
| T13SA03301C0 |  | PT-13 ; Corewall Concrete (Zone SA) | 3d | 2011-02-14 A | 2011-02-21 A | T12SA03301C0 | 100% |  | 2011-03-12 | 2011-03-15 |  |  | CONCRETE [6280 h]; CONCRETE [158 m3]; Cost |  |  | T13SA03301C0 | PT | C | 13 | SA | CT | 033 | 01 | BILL 10 | B10 | S2 | 04 | R00 | ACF03 | 033 | 100 | Z2 | PA | TRUS | D | A10 | EREC | 10FLR |  |  |  |  |  |  |  |  |  |  |  |  |  |  |  |  |
| T13SB03303C0 |  | PT-13 ; Corewall Concrete (Zone SB) | 3d | 2011-03-03 A | 2011-03-10 A | T12SB03303C0 | 100% |  | 2011-03-05 | 2011-03-07 |  |  | CONCRETE [6280 h]; CONCRETE [158 m3]; Cost |  |  | T13SB03303C0 | PT | C | 13 | SB | CT | 033 | 03 | BILL 10 | B10 | S2 | 04 | R00 | ACF03 | 033 | 100 | Z2 | PA | TRUS | D | A10 | EREC | 10FLR |  |  |  |  |  |  |  |  |  |  |  |  |  |  |  |  |
| T13CO05101C0 |  | PT-13 ; Erection of Structural Steel of 13 th Floor (Common Zone) | 4.63d | 2011-05-15 A | 2011-06-01 A | T12CO05103C0, T13SA03301C0, T13SB03303C0 | 100% |  | 2011-06-18 | 2011-06-22 |  |  | STRUCTURAL STEEL [9144 h]; STRUCTURAL STEEL [300 T(Fe)]; Cost |  |  | T13CO05101C0 | PT | C | 13 | CO | ST | 051 | 01 | BILL 10 | B10 | S2 | 01 | R00 | ACF03 | 051 | 95 | Z2 | PA | 10TH | E | A12A | EREC | 11FLR | 208413.58 | ST |  |  |  |  |  |  |  |  |  |  |  |  |  |  |
| T13CO05103C0 |  | PT-13 ; Alignment & welding of 13th Floor (Common Zone) | 3d | 2011-05-15 A | 2011-06-04 A | T13CO05101C0 | 100% |  | 2011-06-22 | 2011-06-26 |  |  | STRUCTURAL STEEL [1152 h]; Cost |  |  | T13CO05103C0 | PT | C | 13 | CO | ST | 051 | 03 | BILL 10 | B10 | S2 | 02 | R00 | ACF03 | 051 | 50 | Z2 | PA | 10TH | E | A12A | EREC | 11FLR | 231883.57 | ST |  |  |  |  |  |  |  |  |  |  |  |  |  |  |
| T13CO05305C0 |  | PT-13 ; Metal Decking 13 FLR (Common Zone) | 12d | 2011-06-01 A | 2011-07-11 A | T13CO05103C0, T14CO05101C0 | 100% |  | 2011-06-05 | 2011-06-19 |  |  | METAL DECKING [2760 h]; METAL DECKING [3493 m2]; Cost |  |  | T13CO05305C0 | PT | C | 13 | CO | ST | 053 | 05 | BILL 10 | B10 | S2 | 03 | R00 | ACF03 | 053 |  | Z2 | PA | 10TH | E | A12A | MDEC | 11FLR | 357106.46 | ST |  |  |  |  |  |  |  |  |  |  |  |  |  |  |
| T13CO03399C0 |  | PT-13 ; Concrete on Metal Decking 13 FLR (Common Zone) | 10d | 2011-07-13 A | 2011-08-14 A | T13CO05305C0 | 100% |  | 2011-08-02 | 2011-08-14 |  |  | CONCRETE [23776 h]; CONCRETE [598 m3]; Cost |  |  | T13CO05335C0 | PT | C | 13 | CO | CT | 033 | 99 | BILL 10 | B10 | S2 | 08 | R00 | ACF03 | 033 |  | Z2 | PA | 10TH | E | A12A | MDEC | 11FLR |  |  | 100 | 90 |  |  |  |  |  |  |  |  |  |  |  |  |
| T13CO07807C0 |  | PT-13 ; Cementitious Fire proofing Lvl 13 (Common Zone) | 12d | 2011-08-10 A | 2011-10-01 | T14CO03399C0 | 95% | 0.6d | 2011-08-01 | 2011-08-14 | 9d | 0d | CEMENTITIOUS FIREPROOFING [3066 h]; CEMENTITIOUS FIREPROOFING [6132 m2]; Cost |  |  | T13CO07807C0 | PT | C | 13 | CO | ST | 078 | 07 | BILL 10 | B10 | S2 | 04 | R00 | ACF03 | 078 |  | Z2 | PA | 10TH | E | A12A | FIRE | 11FLR |  | ST | 90 | 0 | 95 |  |  |  |  |  |  |  |  |  |  |  |
| T13CO04403C0 |  | PT-13 ; C2 Bracket (Common Zone) | 30d | 2011-09-05 A | 2011-11-29 | T13CO07807C0, T12CO04403C0 | 12% | 26.4d | 2011-10-29 | 2011-12-08 | 41.63d | 0d | FACADE CURTAIN WALL 2 [522.3 h]; Cost |  |  | T13CO04403C0 | PT | C | 13 | CO | FA | 044 | 03 | BILL 10 | B10 | S2 | FC2 | R00 | ACF05 | 044 |  |  |  |  |  |  |  |  |  | FA |  |  |  |  |  |  |  |  |  |  |  |  |  |  |
| T13CO04405C0 |  | PT-13 ; C2 Transom & Mullion (Common Zone) | 30d | 2011-11-10 | 2011-12-17 | T13CO04403C0 FF+14d |  |  |  |  | 41.63d | 3.6d | FACADE CURTAIN WALL 2 [2088.7 h]; Cost |  |  | T13CO04405C0 | PT | C | 13 | CO | FA | 044 | 05 | BILL 10 | B10 | S2 | FC2 | R00 | ACF05 | 044 |  |  |  |  |  |  |  |  |  | FA |  |  |  |  |  |  |  |  |  |  |  |  |  |  |
| T13CO04407C0 |  | PT-13 ; C2 Glazing (Common Zone) | 30d | 2011-11-14 | 2011-12-21 | T13CO04405C0 SS, T12CO04407C0 |  |  |  |  | 38.03d | 0d | FACADE CURTAIN WALL 2 [4766.9 h]; FACADE CURTAIN WALL 2 [1742 m2]; FACADE TOTAL QUANTITY m2 [1742 m2]; Cost |  |  | T13CO04407C0 | PT | C | 13 | CO | FA | 044 | 07 | BILL 10 | B10 | S2 | FC2 | R00 | ACF05 | 044 |  |  |  |  |  |  |  |  |  | FA |  |  |  |  |  |  |  |  |  |  |  |  |  |  |
| T13CO04415C0 |  | PT-13 ; SG Catwalk Installation (Common Zone) | 52d | 2012-02-14 | 2012-04-15 | TEXCO04405C0 SS+14d |  |  |  |  | 50.02d | 0d | Labor General [4687.6 h]; Cost |  |  | I05CO04411C0 | PT | C | 13 | CO | FA | 044 | 11 | BILL 10 | B10 | S2 | SG | R00 | ACF05 | 044 |  |  |  |  |  |  |  |  |  | FA |  |  |  |  |  |  |  |  |  |  |  |  |  |  |
|  | 02 | **PAT RM-1** |  | 2011-08-02 | 2013-01-28 |  |  |  |  |  |  |  |  |  |  |  |  |  |  |  |  |  |  |  |  |  |  |  |  |  |  |  |  |  |  |  |  |  |  |  |  |  |  |  |  |  |  |  |  |  |  |  |  |  |
| T13P123001C0 |  | PT-13 ; 1st Fix, Inst. of Supports for MEP (PAT RM-1) | 53.88d | 2011-08-02 A | 2011-10-10 | T13CO07807C0 | 85% | 8.08d | 2011-08-15 | 2011-10-18 | 23.95d | 0d | MECHANICAL [4027.2 h]; Cost [45150.4 AED] | 45,150.38 | 38,377.83 | T13P123001C0 | PT | C | 13 | P1 | ME | 230 | 01 | BILL 10 | B10 | S2 | 1F | R00 | ACF04 | 230 |  |  |  |  |  |  |  |  | 13171.63 | MEP | 10 | 0 | 85 | 0 | 0 | 0 | 0 | 25 | 1S | M1F |  |  |  |  |
| T13P109201C0 |  | PT-13 ; Metal Studs (PAT RM-1) | 60d | 2011-08-10 A | 2011-12-21 | T13P123001C0 SS, T13CO04407C0 FF, T13CO04405C0 FF, T13P123001C0 FF | 40% | 36d | 2012-01-18 | 2012-03-28 | 38.03d | 0d | PARTITIONS [3551 h]; PARTITIONS - Metal Studs [493 m]; Cost |  |  | T13P109201C0 | PT | C | 13 | P1 | PT | 092 | 01 | BILL 10 | B10 | S2 | 1F | R00 | ACF06 | 092 |  |  |  |  |  |  |  |  |  | GP | 20 | 0 | 40 | 0 | 0 | 0 | 0 |  |  | PMS | 313 | 944 |  |  |
| T13P109203C0 |  | PT-13 ; Partitions 1st face (PAT RM-1) | 45d | 2011-09-05 A | 2012-02-02 | T13P109201C0 | 20% | 36d | 2011-10-24 | 2011-12-21 | 56.15d | 12d | PARTITIONS [493 m]; PARTITIONS [2772 h]; Cost |  |  | T13P109203C0 | PT | C | 13 | P1 | PT | 092 | 03 | BILL 10 | B10 | S2 | 2F | R00 | ACF06 | 092 |  |  |  |  |  |  |  |  |  | GP |  |  |  |  |  |  |  |  |  | P1F | 314 | 945 |  |  |
| T13P126001C0 |  | PT-13 ; 1st Fix, Inst of Trunking/Conduiting (PAT RM-1) | 48d | 2011-10-10 | 2011-12-11 | T13CO07807C0, T13P123001C0 |  |  |  |  | 23.95d | 0d | ELECTRICAL [734.4 h]; Cost |  |  | T13P126001C0 | PT | C | 13 | P1 | ME | 260 | 01 | BILL 10 | B10 | S2 | 1F | R00 | ACF04 | 260 |  |  |  |  |  |  |  |  | 2219.22 | MEP |  |  |  |  |  |  |  | 25 | 1S | M1F |  |  |  |  |
| T13P127010C0 |  | PT-13 ; 1st Fix, Inst of Trunking for ELV system (PAT RM-1) | 48d | 2011-10-20 | 2011-12-21 | T13CO07807C0, T13P123001C0, T13P126001C0 SS+9d |  |  |  |  | 23.95d | 0d | ELECTRICAL [1512 h]; Cost |  |  | T13P127010C0 | PT | C | 13 | P1 | ME | 270 | 10 | BILL 10 | B10 | S2 | 1F | R00 | ACF04 | 270 |  |  |  |  |  |  |  |  |  | MEP |  |  |  |  |  |  |  |  | 1S | M1F |  |  |  |  |
| T13P126013C0 |  | PT-13 ; 1st Fix, Inst of Cable Tray (PAT RM-1) | 48d | 2011-10-31 | 2012-01-02 | T13CO07807C0, T13P123001C0, T13P127010C0 SS+9d |  |  |  |  | 23.95d | 0d | ELECTRICAL [399.6 h]; Cost |  |  | T13P126013C0 | PT | C | 13 | P1 | ME | 260 | 13 | BILL 10 | B10 | S2 | 1F | R00 | ACF04 | 260 |  |  |  |  |  |  |  |  |  | MEP |  |  |  |  |  |  |  |  | 1S | M1F |  |  |  |  |
| T13P122019C0 |  | PT-13 ; 1st Fix, Inst of Drainage pipe (ceiling) (PAT RM-1) | 48d | 2011-11-14 | 2012-01-12 | T13P123001C0, T13P126013C0 SS+9d |  |  |  |  | 23.95d | 0d | PLUMBING [1378.8 h]; Cost |  |  | T13P122019C0 | PT | C | 13 | P1 | ME | 220 | 19 | BILL 10 | B10 | S2 | 1F | R00 | ACF04 | 220 |  |  |  |  |  |  |  |  |  | MEP |  |  |  |  |  |  |  |  | 1S | M1F |  |  |  |  |
| T13P122005C0 |  | PT-13 ; 1st Fix, Inst of Water supply pipe (ceiling) (PAT RM-1) | 60d | 2011-11-24 | 2012-02-07 | T13P122019C0 SS+9d, T13P123001C0 |  |  |  |  | 23.95d | 0d | PLUMBING [4548 h]; Cost |  |  | T13P122005C0 | PT | C | 13 | P1 | ME | 220 | 05 | BILL 10 | B10 | S2 | 1F | R00 | ACF04 | 220 |  |  |  |  |  |  |  |  |  | MEP |  |  |  |  |  |  |  |  | 1S | M1F |  |  |  |  |
| T13P121111C0 |  | PT-13 ; 1st Fix, Inst of Sprinkler main pipe (PAT RM-1) | 48d | 2011-12-07 | 2012-02-02 | T13P122005C0 SS+9d, T13P123001C0 |  |  |  |  | 23.95d | 0d | MECHANICAL [853.2 h]; Cost |  |  | T13P121111C0 | PT | C | 13 | P1 | ME | 211 | 11 | BILL 10 | B10 | S2 | 1F | R00 | ACF04 | 211 |  |  |  |  |  |  |  |  |  | MEP |  |  |  |  |  |  |  |  | 1S | M1F |  |  |  |  |
| T13P109702C0 |  | PT-13 ; Installation of Bathroom Pods (PAT RM-1) | 0d | 2011-12-11 | 2011-12-11 | T12P109702C0, T12P209702C0, T13CO07807C0, AAFCI09201R02 FS+118d |  |  |  |  | 149.63d | 0d | Cost |  |  | T10P109701C0 | PT | C | 13 | P1 | BP | 097 | 01 | BILL 10 | B10 | S2 | FG | R00 | ACF06 | 097 |  |  |  |  |  |  |  |  |  |  |  |  |  |  |  |  |  |  |  |  | 105 | 1002 |  |  |
| T13P122007C0 |  | PT-13 ; 1st Fix, Inst of Medical Gas pipe (PAT RM-1) | 48d | 2011-12-18 | 2012-02-14 | T13P121111C0 SS+9d, T13P123001C0 |  |  |  |  | 47.07d | 2.92d | PLUMBING [1149.6 h]; Cost |  |  | T13P122007C0 | PT | C | 13 | P1 | ME | 220 | 07 | BILL 10 | B10 | S2 | 1F | R00 | ACF04 | 220 |  |  |  |  |  |  |  |  |  | MEP |  |  |  |  |  |  |  |  | 1S | M1F |  |  |  |  |
| T13P105503C0 |  | PT-13 ; Ceiling Support for medical equipment (PAT RM-1) | 24d | 2011-12-21 | 2012-01-19 | T13P109201C0, TAFCI22011R20 FS+65d |  |  |  |  | 38.03d | 14.08d | SECONDARY STEEL [62 h]; STRUCTURAL STEEL [28 T(Fe)]; Cost |  |  | D03EY05503C0 | PT | C | 13 | P1 | SW | 055 | 03 | BILL 10 | B10 | S2 | 03 | R00 | ACF03 | b |  |  |  |  |  |  |  |  |  |  |  |  |  |  |  |  |  |  |  |  | 335 | 962 |  |  |
| T13P122011C0 |  | PT-13 ; 2nd Fix, Drainage/Water pipe (wall) (PAT RM-1) | 42d | 2011-12-21 | 2012-02-11 | T13P109201C0 |  |  |  |  | 44.15d | 0d | PLUMBING [1378.8 h]; Cost |  |  | T13P122011C0 | PT | C | 13 | P1 | ME | 220 | 11 | BILL 10 | B10 | S2 | 2F | R00 | ACF07 | 220 |  |  |  |  |  |  |  |  |  | MEP |  |  |  |  |  |  |  |  | 2n |  |  |  |  |  |
| T13P122015C0 |  | PT-13 ; 2nd Fix, Medical Gas pipe (PAT RM-1) | 42d | 2011-12-21 | 2012-02-11 | T13P109201C0, T13P122007C0 SS |  |  |  |  | 44.15d | 0d | PLUMBING [1149.6 h]; Cost |  |  | T13P122015C0 | PT | C | 13 | P1 | ME | 220 | 15 | BILL 10 | B10 | S2 | 2F | R00 | ACF07 | 220 |  |  |  |  |  |  |  |  |  | MEP |  |  |  |  |  |  |  |  | 2n |  |  |  |  |  |
| T13P126009C0 |  | PT-13 ; 2nd Fix, Inst of Wall conduites (PAT RM-1) | 42d | 2011-12-21 | 2012-02-11 | T13P109201C0 |  |  |  |  | 44.15d | 0d | ELECTRICAL [734.4 h]; Cost |  |  | T13P126009C0 | PT | C | 13 | P1 | ME | 260 | 09 | BILL 10 | B10 | S2 | 2F | R00 | ACF07 | 260 |  |  |  |  |  |  |  |  | 4438.43 | MEP |  |  |  |  |  |  |  | 20 | 2n |  |  |  |  |  |
| T13P123017C0 |  | PT-13 ; 1st Fix, Inst of CHW pipe (PAT RM-1) | 54d | 2011-12-24 | 2012-02-27 | T13P121111C0 SS+14d, T13P123001C0, T13P105503C0 FF+18d |  |  |  |  | 23.95d | 0d | MECHANICAL [2467.2 h]; Cost |  |  | T13P123017C0 | PT | C | 13 | P1 | ME | 230 | 17 | BILL 10 | B10 | S2 | 1F | R00 | ACF04 | 230 |  |  |  |  |  |  |  |  |  | MEP |  |  |  |  |  |  |  |  | 1S | M1F |  |  |  |  |
| T13P108103C0 |  | PT-13 ; Door Frames (PAT RM-1) | 36d | 2012-01-02 | 2012-02-13 | T13P109201C0, GNHE08101C0 FS+126d, T12PA08103C0 SS+3d |  |  |  |  | 40.5d | 0d | ASSORTED DOORS [303 h]; Cost |  |  | T13P108103C0 | PT | C | 13 | P1 | DO | 081 | 03 | BILL 10 | B10 | S2 | DF | R00 | ACF06 | 081 |  |  |  |  |  |  |  |  |  |  |  |  |  |  |  |  |  |  |  |  | 316 | 947 | 08 |  |
| T13P127001C0 |  | PT-13 ; 1st Fix, Wiring/ Cabling work (PAT RM-1) | 48d | 2012-01-02 | 2012-02-28 | T13P126001C0, T13P126013C0, T13P127010C0 |  |  |  |  | 112.95d | 89d | ELECTRICAL [392.4 h]; Cost |  |  | T13P127001C0 | PT | C | 13 | P1 | ME | 270 | 01 | BILL 10 | B10 | S2 | 1F | R00 | ACF04 | 270 |  |  |  |  |  |  |  |  |  | MEP |  |  |  |  |  |  |  |  | 1S | M1F |  |  |  |  |
| T13P123023C0 |  | PT-13 ; 1st Fix, Inst of Main Ducting (PAT RM-1) | 60d | 2012-01-05 | 2012-03-17 | T13P123001C0, T13P123017C0 SS+10d |  |  |  |  | 49.95d | 0d | MECHANICAL [8022 h]; Cost |  |  | T13P123023C0 | PT | C | 13 | P1 | ME | 230 | 23 | BILL 10 | B10 | S2 | 1F | R00 | ACF04 | 230 |  |  |  |  |  |  |  |  |  | MEP |  |  |  |  |  |  |  |  | 1S | M1F |  |  |  |  |
| T13P105511C0 |  | PT-13 ; Wall reinforcement for MEP/Medical (PAT RM-1) | 24d | 2012-01-07 | 2012-02-02 | T13P109201C0, TAFCI22011R02 FS+65d |  |  |  |  | 55.75d | 11.6d | SECONDARY STEEL [26 h]; Cost |  |  | T13P105511C0 | PT | C | 13 | P1 | SW | 055 | 11 | BILL 10 | B10 | S2 | 03 | R00 | ACF03 | b |  |  |  |  |  |  |  |  |  |  |  |  |  |  |  |  |  |  |  |  |  |  |  |  |
| T13P121117C0 |  | PT-13 ; 1st Fix, Inst of Sprinkler branch pipe (PAT RM-1) | 48d | 2012-02-02 | 2012-03-31 | T13P109201C0, T13P121111C0, T13P105503C0 FF+18d |  |  |  |  | 85.95d | 62d | MECHANICAL [561.6 h]; Cost |  |  | T13P121117C0 | PT | C | 13 | P1 | ME | 211 | 17 | BILL 10 | B10 | S2 | 1F | R00 | ACF04 | 211 |  |  |  |  |  |  |  |  |  | MEP |  |  |  |  |  |  |  |  | 1S | M1F |  |  |  |  |
| T13P101005C0 |  | PT-13 ; 2nd, Wall Inspection by Consultant (PAT RM-1) | 6d | 2012-02-11 | 2012-02-18 | T13P122011C0, T13P122015C0, T13P126009C0 |  |  |  |  | 44.15d | 0d | Labor General [1.2 h]; Cost |  |  | T13P101005C0 | PT | C | 13 | P1 | ME | 010 | 05 | BILL 10 | B10 | S2 | WI | R00 | ACF07 | 010 |  |  |  |  |  |  |  |  |  | MEP |  |  |  |  |  |  |  |  | 2n |  |  |  |  |  |
| T13P109205C0 |  | PT-13 ; Partitions Closing (PAT RM-1) | 47.88d | 2012-02-18 | 2012-04-14 | T13P101005C0, T13P105511C0, T13P109203C0, T13P122005C0, T13P122019C0, TAFOA09214C1 FF, T13P109702C0 FF, T13P108103C0 FF |  |  |  |  | 44.15d | 0d | PARTITIONS [493 m]; PARTITIONS [3563 h]; Cost |  |  | T13P109205C0 | PT | C | 13 | P1 | PT | 092 | 05 | BILL 10 | B10 | S2 | FF | R00 | ACF06 | 092 |  |  |  |  |  |  |  |  |  | GP |  |  |  |  |  |  |  |  |  | P2F | 315 | 946 |  |  |
| T13P123009C0 |  | PT-13 ; 2nd Fix, Inst of VAV'S CHW connection (PAT RM-1) | 42d | 2012-02-27 | 2012-04-16 | T13P123017C0 |  |  |  |  | 23.95d | 0d | MECHANICAL [1450.8 h]; Cost |  |  | T13P123009C0 | PT | C | 13 | P1 | ME | 230 | 09 | BILL 10 | B10 | S2 | 2F | R00 | ACF07 | 230 |  |  |  |  |  |  |  |  |  | MEP |  |  |  |  |  |  |  |  | 2n |  |  |  |  |  |
| T13P123008C0 |  | PT-13 ; 1st Fix, Inst of VCD's/FD's (PAT RM-1) | 48d | 2012-03-17 | 2012-05-12 | T13P123023C0, T13P105503C0 FF+18d |  |  |  |  | 49.95d | 26d | MECHANICAL [1753.2 h]; Cost |  |  | T13P123008C0 | PT | C | 13 | P1 | ME | 230 | 08 | BILL 10 | B10 | S2 | 1F | R00 | ACF04 | 230 |  |  |  |  |  |  |  |  |  | MEP |  |  |  |  |  |  |  |  | 1S | M1F |  |  |  |  |
| T13P107103C0 |  | PT-13 ; Waterproofing (PAT RM-1) | 11.88d | 2012-04-14 | 2012-04-28 | T13P108103C0, T13P109205C0 |  |  |  |  | 134.78d | 58.33d | THERMAL & MOISTURE [504 h]; THERMAL & MOISTURE [3326 m2]; Cost |  |  | T13P107103C0 | PT | C | 13 | P1 | FF | 071 | 03 | BILL 10 | B10 | S2 | 01 | R00 | ACF03 | 071 |  |  |  |  |  |  |  |  |  |  |  |  |  |  |  |  |  |  |  |  | 105 | 999 |  |  |
| T13P109901C0 |  | PT-13 ; Wall Prime & 1st coat (PAT RM-1) | 30d | 2012-04-14 | 2012-05-19 | T13P109205C0 |  |  |  |  | 44.15d | 0d | WALL PAINT [587 h]; WALL PAINT [731 m2]; Cost |  |  | T13P109901C0 | PT | C | 13 | P1 | PA | 099 | 01 | BILL 10 | B10 | S2 | 01 | R00 | ACF06 | 099 |  |  |  |  |  |  |  |  |  |  |  |  |  |  |  |  |  |  |  |  | 328 | 956 |  |  |
| T13P126005C0 |  | PT-13 ; 2nd Fix, Wiring for Power/Lighting/Emergency (PAT RM-1) | 42d | 2012-04-14 | 2012-06-02 | T13P109205C0 |  |  |  |  | 100.15d | 0d | ELECTRICAL [392.4 h]; Cost |  |  | T13P126005C0 | PT | C | 13 | P1 | ME | 260 | 05 | BILL 10 | B10 | S2 | 2F | R00 | ACF07 | 260 |  |  |  |  |  |  |  |  |  | MEP |  |  |  |  |  |  |  |  | 2n |  |  |  |  |  |
| T13P126007C0 |  | PT-13 ; 2nd Fix, Cable Pulling (PAT RM-1) | 48d | 2012-04-14 | 2012-06-09 | T13P109201C0 SS+6d, T13P109205C0 |  |  |  |  | 134.9d | 110.96d | ELECTRICAL [2683.2 h]; Cost |  |  | T13P126007C0 | PT | C | 13 | P1 | ME | 260 | 07 | BILL 10 | B10 | S2 | 2F | R00 | ACF07 | 260 |  |  |  |  |  |  |  |  |  | MEP |  |  |  |  |  |  |  |  | 2n |  |  |  |  |  |
| T13P126011C0 |  | PT-13 ; 2nd Fix, Inst of Equipment (DB) (PAT RM-1) | 54d | 2012-04-14 | 2012-06-17 | T13P109205C0 |  |  |  |  | 122.65d | 82.21d | ELECTRICAL [878.4 h]; Cost |  |  | T13P126011C0 | PT | C | 13 | P1 | ME | 260 | 11 | BILL 10 | B10 | S2 | 2F | R00 | ACF04 | 260 |  |  |  |  |  |  |  |  |  | MEP |  |  |  |  |  |  |  |  | 2n |  |  |  |  | E |
| T13P126053C0 |  | PT-13 ; 2nd Fix, Wiring / Cabling (PAT RM-1) | 42d | 2012-04-14 | 2012-06-02 | T13P109203C0, T13P109205C0 |  |  |  |  | 52.15d | 28.21d | ELECTRICAL [392.4 h]; Cost |  |  | T13P126053C0 | PT | C | 13 | P1 | ME | 260 | 53 | BILL 10 | B10 | S2 | 2F | R00 | ACF07 | 260 |  |  |  |  |  |  |  |  |  | MEP |  |  |  |  |  |  |  |  | 2n |  | 389 | 977 |  |  |
| T13P123015C0 |  | PT-13 ; 2nd Fix, Insulation of CHW pipe & Duct (PAT RM-1) | 48d | 2012-04-16 | 2012-06-11 | T13P123009C0, T13P123017C0, T13P123023C0 |  |  |  |  | 23.95d | 0d | MECHANICAL [3064.8 h]; Cost |  |  | T13P123015C0 | PT | C | 13 | P1 | ME | 230 | 15 | BILL 10 | B10 | S2 | 2F | R00 | ACF07 | 230 |  |  |  |  |  |  |  |  |  | MEP |  |  |  |  |  |  |  |  | 2n |  |  |  |  |  |
| T13P105501C0 |  | PT-13 ; Handrails & balustrade (PAT RM-1) | 30.5d | 2012-05-19 | 2012-06-24 | T13P109901C0 |  |  |  |  | 71.03d | 39.71d | SECONDARY STEEL [230 h]; Cost |  |  | T13P105501C0 | PT | C | 13 | P1 | SW | 055 | 01 | BILL 10 | B10 | S2 | 01 | R00 | ACF03 | a |  |  |  |  |  |  |  |  |  |  |  |  |  |  |  |  |  |  |  |  |  |  |  |  |
| T13P126015C0 |  | PT-13 ; Final Fix, Termination & Gladding of Cables (PAT RM-1) | 36d | 2012-06-02 | 2012-07-15 | T13P126005C0 |  |  |  |  | 100.15d | 76.21d | ELECTRICAL [148.8 h]; Cost |  |  | T13P126015C0 | PT | C | 13 | P1 | ME | 260 | 15 | BILL 10 | B10 | S2 | FF | R00 | ACF07 | 260 |  |  |  |  |  |  |  |  |  | MEP |  |  |  |  |  |  |  |  | FF |  |  |  |  |  |
| T13P109501C0 |  | PT-13 ; Ceiling Grid and Service Tile (PAT RM-1) | 20d | 2012-06-11 | 2012-07-05 | T13P105503C0, T13P109205C0 SS+15d, T13P121117C0, T13P123008C0, T13P123009C0, T13P123015C0, T13P127001C0, T13P126053C0 FF, T13P109901C0 |  |  |  |  | 23.95d | 0d | CEILING GRID FOR GYPSUM [4870 h]; CEILING GRID FOR GYPSUM [416.8 m2]; Cost |  |  | T13P109501C0 | PT | C | 13 | P1 | CE | 095 | 01 | BILL 10 | B10 | S2 | 01 | R00 | ACF06 | 095 |  |  |  |  |  |  |  |  |  |  |  |  |  |  |  |  |  |  |  |  | 323 | 952 |  |  |
| T13P109510C0 |  | PT-13 ; Patient Lift Ceiling Rail (by others) (PAT RM-1) | 30d | 2012-06-11 | 2012-07-17 | T13P109501C0 SS |  |  |  |  | 102.7d | 78.75d | Labor General [0.2 h]; Cost |  |  | I06P109501C0 | PT | C | 13 | P1 | CE | 095 | 10 | BILL 10 | B10 | S2 | 02 | R00 | ACF06 | 095 |  |  |  |  |  |  |  |  |  |  |  |  |  |  |  |  |  |  |  |  | 323 | 952 |  |  |
| T13P109305C0 |  | PT-13 ; Flooring (Terrazzo) (PAT RM-1) | 30d | 2012-07-05 | 2012-08-09 | T13P107103C0, T13P109501C0 |  |  |  |  | 76.45d | 0d | TERRAZO FLOOR [1427 m2]; TERRAZO FLOOR [2568 h]; Cost |  |  | T13P109305C0 | PT | C | 13 | P1 | FF | 096 | 05 | BILL 10 | B10 | S2 | 07 | R00 | ACF06 | TZ |  |  |  |  |  |  |  |  |  |  |  |  |  |  |  |  |  |  |  |  | 106 | 1000 |  |  |
| T13P109601C0 |  | PT-13 ; Flooring (Rubber & etc) (PAT RM-1) | 30d | 2012-07-05 | 2012-08-09 | T13P109501C0, T13P105501C0 FF |  |  |  |  | 31.32d | 0d | RUBBER FLOOR [32 h]; RUBBER FLOOR [77 m2]; Cost |  |  | T13P109601C0 | PT | C | 13 | P1 | FF | 096 | 01 | BILL 10 | B10 | S2 | 03 | R00 | ACF06 | RF |  |  |  |  |  |  |  |  |  |  |  |  |  |  |  |  |  |  |  |  | 326 | 955 |  |  |
| T13P109905C0 |  | PT-13 ; Ceiling Prime & 1st coat (PAT RM-1) | 30d | 2012-07-05 | 2012-08-09 | T13P109501C0 |  |  |  |  | 106.45d | 0d | CEILING PAINT [36 h]; CEILING PAINT [43 m2]; Cost |  |  | T13P109905C0 | PT | C | 13 | P1 | PA | 099 | 05 | BILL 10 | B10 | S2 | 01 | R00 | ACF06 | 099 |  |  |  |  |  |  |  |  |  |  |  |  |  |  |  |  |  |  |  |  | 330 | 958 |  |  |
| T13P121115C0 |  | PT-13 ; 2nd Fix, Inst of Sprinkler droppers (PAT RM-1) | 42d | 2012-07-05 | 2012-08-26 | T13P109501C0 |  |  |  |  | 29.95d | 0d | MECHANICAL [1602 h]; Cost |  |  | T13P121115C0 | PT | C | 13 | P1 | ME | 211 | 15 | BILL 10 | B10 | S2 | 2F | R00 | ACF07 | 211 |  |  |  |  |  |  |  |  |  | MEP |  |  |  |  |  |  |  |  | 2n |  |  |  |  |  |
| T13P123021C0 |  | PT-13 ; 2nd Fix, Inst of Flexible Duct & Plenum boxes (PAT RM-1) | 42d | 2012-07-05 | 2012-08-26 | T13P109205C0, T13P109501C0 |  |  |  |  | 29.95d | 0d | MECHANICAL [30 h]; Cost |  |  | T13P123021C0 | PT | C | 13 | P1 | ME | 230 | 21 | BILL 10 | B10 | S2 | 2F | R00 | ACF07 | 230 |  |  |  |  |  |  |  |  |  | MEP |  |  |  |  |  |  |  |  | 2n |  |  |  |  |  |
| T13P126017C0 |  | PT-13 ; Final Fix, Inst of Ceiling rose (PAT RM-1) | 36d | 2012-07-05 | 2012-08-16 | T13P109501C0 |  |  |  |  | 23.95d | 0d | ELECTRICAL [61.2 h]; Cost |  |  | T13P126017C0 | PT | C | 13 | P1 | ME | 260 | 17 | BILL 10 | B10 | S2 | FF | R00 | ACF07 | 260 |  |  |  |  |  |  |  |  |  | MEP |  |  |  |  |  |  |  |  | FF |  |  |  |  |  |
| T13P127002C0 |  | PT-13 ; 2nd Fix, Wiring Droppers (PAT RM-1) | 42d | 2012-07-05 | 2012-08-26 | T13P109501C0 |  |  |  |  | 23.95d | 0d | ELECTRICAL [392.4 h]; Cost |  |  | T13P127002C0 | PT | C | 13 | P1 | ME | 270 | 02 | BILL 10 | B10 | S2 | 2F | R00 | ACF07 | 270 |  |  |  |  |  |  |  |  |  | MEP |  |  |  |  |  |  |  |  | 2n |  |  |  |  |  |
| T13P127020C0 |  | PT-13 ; 2nd Fix, Inst of ELV Equipment (Panels) (PAT RM-1) | 66d | 2012-07-05 | 2012-09-23 | T13P109205C0, T13P109501C0 |  |  |  |  | 40.45d | 0d | ELECTRICAL [1819.2 h]; Cost |  |  | T13P127020C0 | PT | C | 13 | P1 | ME | 270 | 20 | BILL 10 | B10 | S2 | 2F | R00 | ACF04 | 270 |  |  |  |  |  |  |  |  |  | MEP |  |  |  |  |  |  |  |  | 2n |  |  |  |  | E |
| T13P140303C0 |  | PT-13 ; Final Fix, Pneumatic Station (PAT RM-1) | 36d | 2012-07-05 | 2012-08-16 | T13P109501C0 |  |  |  |  | 118.45d | 94.5d | MECHANICAL [2974.8 h]; Cost |  |  | T13P140303C0 | PT | C | 13 | P1 | ME | 403 | 03 | BILL 10 | B10 | S2 | FF | R00 | ACF07 | 403 |  |  |  |  |  |  |  |  |  | MEP |  |  |  |  |  |  |  |  | FF |  |  |  |  |  |
| T13P108107C0 |  | PT-13 ; Doors (PAT RM-1) | 36d | 2012-08-09 | 2012-09-23 | T13P108103C0, T13P109501C0, T13P109601C0, T13P109901C0 |  |  |  |  | 68.32d | 0d | ASSORTED DOORS [610 h]; ASSORTED DOORS [61 no]; Cost |  |  | T13P108107C0 | PT | C | 13 | P1 | DO | 081 | 07 | BILL 10 | B10 | S2 | DR | R00 | ACF06 | 081 |  |  |  |  |  |  |  |  |  |  |  |  |  |  |  |  |  |  |  |  | 317 | 948 | 08 |  |
| T13P109903C0 |  | PT-13 ; Wall Final Paint (PAT RM-1) | 30d | 2012-08-09 | 2012-09-16 | T13P109901C0, T13P109905C0, T13P109501C0 |  |  |  |  | 106.45d | 72d | WALL PAINT [316 h]; WALL PAINT [394 m2]; Cost |  |  | T13P109903C0 | PT | C | 13 | P1 | PA | 099 | 03 | BILL 10 | B10 | S2 | 02 | R00 | ACF06 | 099 |  |  |  |  |  |  |  |  |  |  |  |  |  |  |  |  |  |  |  |  | 329 | 957 |  |  |
| T13P122025C0 |  | PT-13 ; Final Fix, Inst of Sanitary Ware (PAT RM-1) | 42d | 2012-08-09 | 2012-09-30 | T13P109205C0, T13P109305C0 |  |  |  |  | 76.45d | 0d | PLUMBING [3690 h]; Cost |  |  | T13P122025C0 | PT | C | 13 | P1 | ME | 220 | 25 | BILL 10 | B10 | S2 | FF | R00 | ACF07 | 220 |  |  |  |  |  |  |  |  |  | MEP |  |  |  |  |  |  |  |  | FF |  |  |  |  |  |
| T13P106101C0 |  | PT-13 ; Wood / caseworks (PAT RM-1) | 48d | 2012-08-09 | 2012-10-07 | T12P106101C0 SS+5d, T13CO04407C0, T13P109501C0, T13P109601C0, T13P109901C0, TAFWA00101M0 |  |  |  |  | 31.06d | 0d | WOOD WORK/CASEWORK [873.9 no]; WOOD WORK/CASEWORK [1915 h]; Cost |  |  | T13P106101C0 | PT | C | 13 | P1 | WO | 061 | 01 | BILL 10 | B10 | S2 | WW | R00 | ACF06 | 061 |  |  |  |  |  |  |  |  |  |  |  |  |  |  |  |  |  |  |  |  | 332 | 960 |  |  |
| T13P106102C0 |  | PT-13 ; Head/Foot Wall (PAT RM-1) | 54d | 2012-08-09 | 2012-10-14 | T13CO04407C0, T13P109501C0, TAFWA00101M0, T13P106101C0 SS |  |  |  |  | 52.19d | 0d | WOOD WORK/CASEWORK [1649 h]; Cost |  |  | T13P106102C0 | PT | C | 13 | P1 | WO | 061 | 02 | BILL 10 | B10 | S2 | WW | R00 | ACF06 | 061 |  |  |  |  |  |  |  |  |  |  |  |  |  |  |  |  |  |  |  |  | 332 | 960 |  |  |
| T13P122021C0 |  | PT-13 ; Final Fix, Terminate Sanitary Ware & Appliances (PAT RM-1) | 42d | 2012-08-16 | 2012-10-07 | T13P122011C0, T13P122025C0 SS+6d |  |  |  |  | 76.45d | 52.5d | PLUMBING [3361.2 h]; Cost |  |  | T13P122021C0 | PT | C | 13 | P1 | ME | 220 | 21 | BILL 10 | B10 | S2 | FF | R00 | ACF07 | 220 |  |  |  |  |  |  |  |  |  | MEP |  |  |  |  |  |  |  |  | FF |  |  |  |  |  |
| T13P126003C0 |  | PT-13 ; Final Fix, Inst of Light fittings (PAT RM-1) | 48d | 2012-08-16 | 2012-10-14 | T13P109501C0, T13P126017C0 |  |  |  |  | 23.95d | 0d | ELECTRICAL [7815.6 h]; Cost |  |  | T13P126003C0 | PT | C | 13 | P1 | ME | 260 | 03 | BILL 10 | B10 | S2 | FF | R00 | ACF07 | 260 |  |  |  |  |  |  |  |  |  | MEP |  |  |  |  |  |  |  |  | FF |  |  |  |  |  |

| ID | WBS | Activity | Duration | Start | Finish | Predecessors | Complete | Remaining | Planned start | Planned finish | Total float | Free float | Resources | Cost | Actual cost | change id | CCAD BUILDING(SET) | CCAD PHASE(SET) | CCAD FLOOR(SET) | CCAD ZONE(SET) | CCAD WORK(SET) | CCAD SECTION(SET) | CCAD SERIAL No.(SET) | CCAD SUB ZONE MEP(SET) | CCAD CBS(SET) | CCAD BILL(SET) | CCAD HANDOVER(SET) | CCAD TAG(SET) | CCAD REV(SET) | CCADACF (SET) | CCAD CSA | CCAD SSCF | Change Order # | NEW ACTIVITY ID | CCAD DIVISION(SET) | user_number8 | user_integer1 | user_integer2 | user_number7 | July2011 Target% Complete | Claimed This Month | P_811 | P_711 | U% | Act Selector % | CCAD MEQ |
| --- | --- | --- | --- | --- | --- | --- | --- | --- | --- | --- | --- | --- | --- | --- | --- | --- | --- | --- | --- | --- | --- | --- | --- | --- | --- | --- | --- | --- | --- | --- | --- | --- | --- | --- | --- | --- | --- | --- | --- | --- | --- | --- | --- | --- | --- | --- |
| T13P121113C0 |  | PT-13 ; Final Fix, Inst of Sprinklers head/ Extinguisher (PAT RM-1) | 36d | 2012-08-26 | 2012-10-07 | T13P109501C0, T13P121115C0 |  |  |  |  | 29.95d | 6d | MECHANICAL [234 h]; Cost |  |  | T13P121113C0 | PT | C | 13 | P1 | ME | 211 | 13 | FF | BILL 10 | B10 | S2 | FF | R00 | ACF07 | MEP | 211 |  |  |  |  |  |  |  |  |  |  |  |  |  |  |
| T13P123019C0 |  | PT-13 ; Final Fix, Inst of Grilles & Diffusers (PAT RM-1) | 36d | 2012-08-26 | 2012-10-07 | T13P109501C0, T13P123021C0 |  |  |  |  | 29.95d | 6d | MECHANICAL [1498.8 h]; Cost |  |  | T13P123019C0 | PT | C | 13 | P1 | ME | 230 | 19 | FF | BILL 10 | B10 | S2 | FF | R00 | ACF07 | MEP | 230 |  |  |  |  |  |  |  |  |  |  |  |  |  |  |
| T13P127030C0 |  | PT-13 ; Final Fix, Inst of ELV device (Detector/Speaker) (PAT RM-1) | 42d | 2012-08-26 | 2012-10-14 | T13P109501C0, T13P127002C0 |  |  |  |  | 23.95d | 0d | ELECTRICAL [3571.2 h]; Cost |  |  | T13P127030C0 | PT | C | 13 | P1 | ME | 270 | 30 | FF | BILL 10 | B10 | S2 | FF | R00 | ACF07 | MEP | 270 |  |  |  |  |  |  |  |  |  |  |  |  |  |  |
| T13P108709C0 |  | PT-13 ; Ironmongery (PAT RM-1) | 32.12d | 2012-09-23 | 2012-11-01 | T13P108107C0 |  |  |  |  | 68.32d | 44.38d | IRONMONGERY [870 h]; IRONMONGERY [87 no]; Cost |  |  | T13P108709C0 | PT | C | 13 | P1 | DO | 087 | 09 |  | BILL 10 | B10 | S2 | IM | R00 | ACF06 |  | 087 | 322 | 951 | 08 |  |  |  |  |  |  |  |  |  |  |  |
| T13P109701C0 |  | PT-13 ; Wall finishes (ST, WD, WC) (PAT RM-1) | 36d | 2012-09-23 | 2012-11-06 | T13P126011C0, T13P127020C0, T13P109501C0, T13P109601C0, T13P109305C0 |  |  |  |  | 40.45d | 0d | ASSORTED WALL FINISH [519 h]; ASSORTED WALL FINISH [595 m2]; Cost |  |  | T13P109701C0 | PT | C | 13 | P1 | WF | 097 | 01 |  | BILL 10 | B10 | S2 | 01 | R00 | ACF06 |  | 097 | 105 | 1002 |  |  |  |  |  |  |  |  |  |  |  |  |
| T13P101006C0 |  | PT-13 ; 2nd, Ceiling Inspection by Consultants (PAT RM-1) | 4.75d | 2012-10-14 | 2012-10-20 | T13P121115C0, T13P123009C0, T13P123015C0, T13P127002C0, T13P109501C0, T13P121113C0, T13P123019C0, T13P126015C0, T13P126017C0, T13P126003C0, T13P127030C0 |  |  |  |  | 23.95d | 0d | Labor General [1.2 h]; Cost |  |  | T13P101006C0 | PT | C | 13 | P1 | ME | 010 | 06 | 2n | BILL 10 | B10 | S2 | CI | R00 | ACF07 | MEP | 010 |  |  |  |  |  |  |  |  |  |  |  |  |  |  |
| T13P122029C0 |  | PT-13 ; Final Fix, Medical Gas pipe (PAT RM-1) | 18d | 2012-10-14 | 2012-11-06 | T13P109501C0, T13P106102C0 |  |  |  |  | 52.19d | 28.24d | PLUMBING [1149.6 h]; Cost |  |  | T13P122029C0 | PT | C | 13 | P1 | ME | 220 | 29 | FF | BILL 10 | B10 | S2 | FF | R00 | ACF07 | MEP | 220 |  |  |  |  |  |  |  |  |  |  |  |  |  |  |
| T13P109503C0 |  | PT-13 ; Ceiling closure - ACT/Gypsum (PAT RM-1) | 23.75d | 2012-10-20 | 2012-11-20 | T13P101006C0, T13P109510C0, T13P121115C0, T13P126005C0, T13P127001C0, T13P127002C0, TAFOA09513C1 FF, T13P106101C0, T13P123021C0, T13P126007C0 |  |  |  |  | 23.95d | 0d | ASSORTED CEILING FINISH [549.81 h]; CEILING GYPSUM [136.74 h]; ASSORTED CEILING FINISH [894 m2]; CEILING GYPSUM [417 m2]; Cost |  |  | T13P109503C0 | PT | C | 13 | P1 | CE | 095 | 03 |  | BILL 10 | B10 | S2 | 02 | R00 | ACF06 |  | 095 | 324 | 953 |  |  |  |  |  |  |  |  |  |  |  |  |
| T13P111001C0 |  | PT-13 ; Wall Protection (WP, CG, WG, FCG) (PAT RM-1) | 24d | 2012-11-06 | 2012-12-06 | T13P109701C0, T13P109903C0 SS |  |  |  |  | 40.45d | 16.5d | FF&E [27 h]; Cost |  |  | T13P111001C0 | PT | C | 13 | P1 | WF | 110 | 01 |  | BILL 10 | B10 | S2 | 03 | R00 | ACF08 |  | b | 326 | 1001 |  |  |  |  |  |  |  |  |  |  |  |  |
| T13P109673C1 |  | PT-13, Carpet Tile Finish (Patient Room-1) | 0d | 2012-11-20 | 2012-11-20 | T13P109907C0 SS |  |  |  |  | 53.95d | 30d | Cost |  |  |  | PT | C | 13 | P1 | FF | 096 |  |  |  | B10 |  |  | R00 | ACF06 | CPT | CPT |  |  |  |  |  |  |  |  |  |  |  |  |  |  |
| T13P109907C0 |  | PT-13 ; Ceiling Final paint (PAT RM-1) | 18d | 2012-11-20 | 2012-12-12 | T13P109601C0, T13P109905C0, T13P109503C0 |  |  |  |  | 35.95d | 0d | CEILING PAINT [20 h]; CEILING PAINT [23 m2]; Cost |  |  | T13P109907C0 | PT | C | 13 | P1 | PA | 099 | 07 |  | BILL 10 | B10 | S2 | 02 | R00 | ACF06 |  | 099 | 331 | 959 |  |  |  |  |  |  |  |  |  |  |  |  |
| T13P111003C0 |  | PT-13 ; FF & E (PAT RM-1) | 18d | 2012-11-20 | 2012-12-12 | T13P109601C0, T13P106101C0, T13P109503C0 |  |  |  |  | 35.95d | 12d | FF&E [1067 h]; Cost |  |  | T13P111003C0 | PT | C | 13 | P1 | WO | 110 | 03 |  | BILL 10 | B10 | S2 | 04 | R00 | ACF08 |  | a | 333 | 961 |  |  |  |  |  |  |  |  |  |  |  |  |
| T13P122027C0 |  | PT-13 ; Final Fix, Inst of All drain (PAT RM-1) | 18d | 2012-11-20 | 2012-12-12 | T13P109305C0, T13P109503C0 |  |  |  |  | 23.95d | 0d | PLUMBING [1378.8 h]; Cost |  |  | T13P122027C0 | PT | C | 13 | P1 | ME | 220 | 27 | FF | BILL 10 | B10 | S2 | FF | R00 | ACF07 | MEP | 220 |  |  |  |  |  |  |  |  |  |  |  |  |  |  |
| T13P126019C0 |  | PT-13 ; Final Fix, Inst of Switch/Sockets (PAT RM-1) | 18d | 2012-11-20 | 2012-12-12 | T13P109901C0, T13P109503C0 |  |  |  |  | 23.95d | 0d | ELECTRICAL [362.4 h]; Cost |  |  | T13P126019C0 | PT | C | 13 | P1 | ME | 260 | 19 | FF | BILL 10 | B10 | S2 | FF | R00 | ACF07 | MEP | 260 |  |  |  |  |  |  |  |  |  |  |  |  |  |  |
|  | 10 | **Precommissioning Tesing & snagging (PAT RM-1)** |  | 2012-12-12 | 2013-01-28 |  |  |  |  |  |  |  |  |  |  |  |  |  |  |  |  |  |  |  |  |  |  |  |  |  |  |  |  |  |  |  |  |  |  |  |  |  |  |  |  |  |
| T13TS01801C0 |  | PT-13 ; MEP de-snag, FIREM sign-off | 12d | 2012-12-12 | 2012-12-26 | T13P122025C0, T13P122027C0, T13P126015C0, T13P122021C0, T13P121113C0, T13P123019C0, T13P140303C0, T13P122029C0, T13P126017C0, T13P126003C0, T13P127030C0, T13P126019C0 |  |  |  |  | 23.95d | 0d | TESTING & COMMISSIONING [2040 h]; Cost |  |  | T13TS01801C0 | PT | C | 13 | TS | SC | 018 | 01 |  | BILL 10 | B10 | S2 | 01 | R00 | ACF07 |  | 018 |  |  |  |  |  |  |  |  |  |  |  |  |  |  |
| T13TS01806C0 |  | PT-13 ; Touch-up & Clean / JV inspection /CIR /De-snag | 18d | 2012-12-26 | 2013-01-17 | T13P106101C0, T13P106102C0, T13P108709C0, T13P109305C0, T13P109510C0, T13P109601C0, T13P109701C0, T13P109903C0, T13P109907C0, T13P111001C0, T13P111003C0, T13TS01801C0, T13P105501C0, T13P109503C0, T13P109673C1, T13P209683C1 |  |  |  |  | 23.95d | 1.12d | TESTING & COMMISSIONING [128 h]; Cost |  |  | T13TS01802C0 | PT | C | 13 | TS | SC | 018 | 02 |  | BILL 10 | B10 | S2 | 02 | R00 | ACF07 |  | 018 |  |  |  |  |  |  |  |  |  |  |  |  |  |  |
| T13TS01809C0 |  | PT-13 ; Consultant's final de-snag inspection | 6.88d | 2013-01-19 | 2013-01-28 | T13TS01806C0, T13TS01811C0 |  |  |  |  | 22.82d | 0d | Labor General [1 h]; Cost |  |  | T13TS01803C0 | PT | C | 13 | TS | SC | 018 | 03 |  | BILL 10 | B10 | S2 | 03 | R00 | ACF07 |  | 018 |  |  |  |  |  |  |  |  |  |  |  |  |  |  |
|  | 03 | **PAT RM-2** |  | 2011-08-02 | 2013-02-05 |  |  |  |  |  |  |  |  |  |  |  |  |  |  |  |  |  |  |  |  |  |  |  |  |  |  |  |  |  |  |  |  |  |  |  |  |  |  |  |  |  |
| T13P223001C0 |  | PT-13 ; 1st Fix, Inst. of Supports for MEP (PAT RM-2) | 53.88d | 2011-08-02 A | 2011-10-10 | T13CO07807C0 | 85% | 8.08d | 2011-08-15 | 2011-10-18 | 26.32d | 0d | MECHANICAL [800.4 h]; Cost [45150.4 AED] | 45,150.38 | 38,377.83 | T13P223001C0 | PT | C | 13 | P2 | ME | 230 | 01 | 1S | BILL 10 | B10 | S2 | 1F | R00 | ACF04 | MEP | 230 |  |  |  | 0 | 0 | 0 | 0 | 25 | 2618.72 | 10 | 0 | 85 | M1F |  |
| T13P209201C0 |  | PT-13 ; Metal Studs (PAT RM-2) | 60d | 2011-08-10 A | 2011-12-21 | T13P223001C0 SS, T13CO04407C0 FF, T13CO04405C0 FF, T13P223001C0 FF | 40% | 36d | 2012-01-25 | 2012-04-04 | 40.4d | 0d | PARTITIONS [2367 h]; PARTITIONS - Metal Studs [328 m]; Cost |  |  | T13P209201C0 | PT | C | 13 | P2 | PT | 092 | 01 |  | BILL 10 | B10 | S2 | 1F | R00 | ACF06 | GP | 092 | 313 | 944 |  | 0 | 0 | 0 | 0 |  |  | 20 | 0 |  | PMS |  |
| T13P209203C0 |  | PT-13 ; Partitions 1st face (PAT RM-2) | 45d | 2011-09-05 A | 2012-02-06 | T13P209201C0 | 15% | 38.25d | 2011-10-24 | 2011-12-21 | 56.28d | 9.75d | PARTITIONS [328 m]; PARTITIONS [1854 h]; Cost |  |  | T13P209203C0 | PT | C | 13 | P2 | PT | 092 | 03 |  | BILL 10 | B10 | S2 | 2F | R00 | ACF06 | GP | 092 | 314 | 945 |  |  |  |  |  |  |  |  |  |  | P1F |  |
| T13P226001C0 |  | PT-13 ; 1st Fix, Inst of Trunking/Conduiting (PAT RM-2) | 48d | 2011-10-10 | 2011-12-11 | T13CO07807C0, T13P223001C0 |  |  |  |  | 26.32d | 0d | ELECTRICAL [734.4 h]; Cost |  |  | T13P226001C0 | PT | C | 13 | P2 | ME | 260 | 01 | 1S | BILL 10 | B10 | S2 | 1F | R00 | ACF04 | MEP | 260 |  |  |  |  |  |  |  | 25 | 2219.22 |  |  |  | M1F |  |
| T13P227010C0 |  | PT-13 ; 1st Fix, Inst of Trunking for ELV system (PAT RM-2) | 48d | 2011-10-20 | 2011-12-21 | T13CO07807C0, T13P223001C0, T13P226001C0 SS+9d |  |  |  |  | 26.32d | 0d | ELECTRICAL [1512 h]; Cost |  |  | T13P227010C0 | PT | C | 13 | P2 | ME | 270 | 10 | 1S | BILL 10 | B10 | S2 | 1F | R00 | ACF04 | MEP | 270 |  |  |  |  |  |  |  |  |  |  |  |  | M1F |  |
| T13P226013C0 |  | PT-13 ; 1st Fix, Inst of Cable Tray (PAT RM-2) | 48d | 2011-10-31 | 2012-01-02 | T13CO07807C0, T13P223001C0, T13P227010C0 SS+9d |  |  |  |  | 26.32d | 0d | ELECTRICAL [399.6 h]; Cost |  |  | T13P226013C0 | PT | C | 13 | P2 | ME | 260 | 13 | 1S | BILL 10 | B10 | S2 | 1F | R00 | ACF04 | MEP | 260 |  |  |  |  |  |  |  |  |  |  |  |  | M1F |  |
| T13P222019C0 |  | PT-13 ; 1st Fix, Inst of Drainage pipe (ceiling) (PAT RM-2) | 48d | 2011-11-14 | 2012-01-12 | T13P223001C0, T13P226013C0 SS+9d |  |  |  |  | 26.32d | 0d | PLUMBING [1378.8 h]; Cost |  |  | T13P222019C0 | PT | C | 13 | P2 | ME | 220 | 19 | 1S | BILL 10 | B10 | S2 | 1F | R00 | ACF04 | MEP | 220 |  |  |  |  |  |  |  |  |  |  |  |  | M1F |  |
| T13P222005C0 |  | PT-13 ; 1st Fix, Inst of Water supply pipe (ceiling) (PAT RM-2) | 60d | 2011-11-24 | 2012-02-07 | T13P222019C0 SS+9d, T13P223001C0 |  |  |  |  | 26.32d | 0d | PLUMBING [4548 h]; Cost |  |  | T13P222005C0 | PT | C | 13 | P2 | ME | 220 | 05 | 1S | BILL 10 | B10 | S2 | 1F | R00 | ACF04 | MEP | 220 |  |  |  |  |  |  |  |  |  |  |  |  | M1F |  |
| T13P221111C0 |  | PT-13 ; 1st Fix, Inst of Sprinkler main pipe (PAT RM-2) | 48d | 2011-12-07 | 2012-02-02 | T13P222005C0 SS+9d, T13P223001C0 |  |  |  |  | 26.32d | 0d | MECHANICAL [853.2 h]; Cost |  |  | T13P221111C0 | PT | C | 13 | P2 | ME | 211 | 11 | 1S | BILL 10 | B10 | S2 | 1F | R00 | ACF04 | MEP | 211 |  |  |  |  |  |  |  |  |  |  |  |  | M1F |  |
| T13P209702C0 |  | PT-13 ; Installation of Bathroom Pods (PAT RM-2) | 0d | 2011-12-11 | 2011-12-11 | T13P109702C0 SS, T13CO07807C0, AAFCI09201R02 FS+118d |  |  |  |  | 152d | 0d | Cost |  |  | T10P109701C0 | PT | C | 13 | P2 | BP | 097 | 01 |  | BILL 10 | B10 | S2 | FG | R00 | ACF06 |  | 097 | 105 | 1002 |  |  |  |  |  |  |  |  |  |  |  |  |
| T13P222007C0 |  | PT-13 ; 1st Fix, Inst of Medical Gas pipe (PAT RM-2) | 48d | 2011-12-18 | 2012-02-14 | T13P221111C0 SS+9d, T13P223001C0 |  |  |  |  | 49.45d | 2.92d | PLUMBING [1149.6 h]; Cost |  |  | T13P222007C0 | PT | C | 13 | P2 | ME | 220 | 07 | 1S | BILL 10 | B10 | S2 | 1F | R00 | ACF04 | MEP | 220 |  |  |  |  |  |  |  |  |  |  |  |  | M1F |  |
| T13P205503C0 |  | PT-13 ; Ceiling Support for medical equipment (PAT RM-2) | 24d | 2011-12-21 | 2012-01-19 | T13P209201C0, TAFCI22011R20 FS+65d |  |  |  |  | 40.4d | 14.08d | SECONDARY STEEL [72 h]; STRUCTURAL STEEL [29 T(Fe)]; Cost |  |  | D03EY05503C0 | PT | C | 13 | P2 | SW | 055 | 03 |  | BILL 10 | B10 | S2 | 03 | R00 | ACF03 |  | b | 335 | 962 |  |  |  |  |  |  |  |  |  |  |  |  |
| T13P222011C0 |  | PT-13 ; 2nd Fix, Drainage/Water pipe (wall) (PAT RM-2) | 42d | 2011-12-21 | 2012-02-11 | T13P209201C0 |  |  |  |  | 46.53d | 0d | PLUMBING [1378.8 h]; Cost |  |  | T13P222011C0 | PT | C | 13 | P2 | ME | 220 | 11 | 2n | BILL 10 | B10 | S2 | 2F | R00 | ACF07 | MEP | 220 |  |  |  |  |  |  |  |  |  |  |  |  |  |  |
| T13P222015C0 |  | PT-13 ; 2nd Fix, Medical Gas pipe (PAT RM-2) | 42d | 2011-12-21 | 2012-02-11 | T13P209201C0, T13P222007C0 SS |  |  |  |  | 46.53d | 0d | PLUMBING [1149.6 h]; Cost |  |  | T13P222015C0 | PT | C | 13 | P2 | ME | 220 | 15 | 2n | BILL 10 | B10 | S2 | 2F | R00 | ACF07 | MEP | 220 |  |  |  |  |  |  |  |  |  |  |  |  |  |  |
| T13P226009C0 |  | PT-13 ; 2nd Fix, Inst of Wall conduites (PAT RM-2) | 42d | 2011-12-21 | 2012-02-11 | T13P209201C0 |  |  |  |  | 46.53d | 0d | ELECTRICAL [734.4 h]; Cost |  |  | T13P226009C0 | PT | C | 13 | P2 | ME | 260 | 09 | 2n | BILL 10 | B10 | S2 | 2F | R00 | ACF07 | MEP | 260 |  |  |  |  |  |  |  | 20 | 4438.43 |  |  |  |  |  |
| T13P223017C0 |  | PT-13 ; 1st Fix, Inst of CHW pipe (PAT RM-2) | 54d | 2011-12-24 | 2012-02-27 | T13P221111C0 SS+14d, T13P223001C0, T13P205503C0 FF+18d |  |  |  |  | 26.32d | 0d | MECHANICAL [2467.2 h]; Cost |  |  | T13P223017C0 | PT | C | 13 | P2 | ME | 230 | 17 | 1S | BILL 10 | B10 | S2 | 1F | R00 | ACF04 | MEP | 230 |  |  |  |  |  |  |  |  |  |  |  |  | M1F |  |
| T13P227001C0 |  | PT-13 ; 1st Fix, Wiring/ Cabling work (PAT RM-2) | 48d | 2012-01-02 | 2012-02-28 | T13P226001C0, T13P226013C0, T13P227010C0 |  |  |  |  | 115.32d | 89d | ELECTRICAL [392.4 h]; Cost |  |  | T13P227001C0 | PT | C | 13 | P2 | ME | 270 | 01 | 1S | BILL 10 | B10 | S2 | 1F | R00 | ACF04 | MEP | 270 |  |  |  |  |  |  |  |  |  |  |  |  | M1F |  |
| T13P208103C0 |  | PT-13 ; Door Frames (PAT RM-2) | 36d | 2012-01-05 | 2012-02-16 | T13P209201C0, GNHE08101C0 FS+126d, T13P108103C0 SS+3d |  |  |  |  | 40.5d | 0d | ASSORTED DOORS [215 h]; Cost |  |  | T13P208103C0 | PT | C | 13 | P2 | DO | 081 | 03 |  | BILL 10 | B10 | S2 | DF | R00 | ACF06 |  | 081 | 316 | 947 | 08 |  |  |  |  |  |  |  |  |  |  |  |
| T13P223023C0 |  | PT-13 ; 1st Fix, Inst of Main Ducting (PAT RM-2) | 60d | 2012-01-05 | 2012-03-17 | T13P223001C0, T13P223017C0 SS+10d |  |  |  |  | 52.32d | 0d | MECHANICAL [8022 h]; Cost |  |  | T13P223023C0 | PT | C | 13 | P2 | ME | 230 | 23 | 1S | BILL 10 | B10 | S2 | 1F | R00 | ACF04 | MEP | 230 |  |  |  |  |  |  |  |  |  |  |  |  | M1F |  |
| T13P205511C0 |  | PT-13 ; Wall reinforcement for MEP/Medical (PAT RM-2) | 24d | 2012-01-07 | 2012-02-02 | T13P209201C0, TAFCI22011R02 FS+65d |  |  |  |  | 58.13d | 11.6d | SECONDARY STEEL [31 h]; Cost |  |  | T13P205511C0 | PT | C | 13 | P2 | SW | 055 | 11 |  | BILL 10 | B10 | S2 | 03 | R00 | ACF03 |  | b |  |  |  |  |  |  |  |  |  |  |  |  |  |  |
| T13P221117C0 |  | PT-13 ; 1st Fix, Inst of Sprinkler branch pipe (PAT RM-2) | 48d | 2012-02-02 | 2012-03-31 | T13P209201C0, T13P221111C0, T13P205503C0 FF+18d |  |  |  |  | 88.32d | 62d | MECHANICAL [561.6 h]; Cost |  |  | T13P221117C0 | PT | C | 13 | P2 | ME | 211 | 17 | 1S | BILL 10 | B10 | S2 | 1F | R00 | ACF04 | MEP | 211 |  |  |  |  |  |  |  |  |  |  |  |  | M1F |  |
| T13P201005C0 |  | PT-13 ; 2nd, Wall Inspection by Consultant (PAT RM-2) | 6d | 2012-02-11 | 2012-02-18 | T13P222011C0, T13P222015C0, T13P226009C0 |  |  |  |  | 46.53d | 0d | Labor General [1.2 h]; Cost |  |  | T13P201005C0 | PT | C | 13 | P2 | ME | 010 | 05 | 2n | BILL 10 | B10 | S2 | WI | R00 | ACF07 | MEP | 010 |  |  |  |  |  |  |  |  |  |  |  |  |  |  |
| T13P209205C0 |  | PT-13 ; Partitions Closing (PAT RM-2) | 47.88d | 2012-02-18 | 2012-04-14 | T13P201005C0, T13P205511C0, T13P209203C0, T13P222005C0, T13P222019C0, TAFOA09214C1 FF, T13P209702C0 FF, T13P208103C0 SS |  |  |  |  | 46.53d | 0d | PARTITIONS [328 m]; PARTITIONS [2369 h]; Cost |  |  | T13P209205C0 | PT | C | 13 | P2 | PT | 092 | 05 |  | BILL 10 | B10 | S2 | FF | R00 | ACF06 | GP | 092 | 315 | 946 |  |  |  |  |  |  |  |  |  |  | P2F |  |
| T13P223009C0 |  | PT-13 ; 2nd Fix, Inst of VAV'S CHW connection (PAT RM-2) | 42d | 2012-02-27 | 2012-04-16 | T13P223017C0 |  |  |  |  | 26.32d | 0d | MECHANICAL [1450.8 h]; Cost |  |  | T13P223009C0 | PT | C | 13 | P2 | ME | 230 | 09 | 2n | BILL 10 | B10 | S2 | 2F | R00 | ACF07 | MEP | 230 |  |  |  |  |  |  |  |  |  |  |  |  |  |  |
| T13P223008C0 |  | PT-13 ; 1st Fix, Inst of VCD's/FD's (PAT RM-2) | 48d | 2012-03-17 | 2012-05-12 | T13P223023C0, T13P205503C0 FF+18d |  |  |  |  | 52.32d | 26d | MECHANICAL [1753.2 h]; Cost |  |  | T13P223008C0 | PT | C | 13 | P2 | ME | 230 | 08 | 1S | BILL 10 | B10 | S2 | 1F | R00 | ACF04 | MEP | 230 |  |  |  |  |  |  |  |  |  |  |  |  | M1F |  |
| T13P207103C0 |  | PT-13 ; Waterproofing (PAT RM-2) | 11.88d | 2012-04-14 | 2012-04-28 | T13P208103C0, T13P209205C0 |  |  |  |  | 141.65d | 62.33d | THERMAL & MOISTURE [384 h]; THERMAL & MOISTURE [2509 m2]; Cost |  |  | T13P207103C0 | PT | C | 13 | P2 | FF | 071 | 03 |  | BILL 10 | B10 | S2 | 01 | R00 | ACF03 |  | 071 | 105 | 999 |  |  |  |  |  |  |  |  |  |  |  |  |
| T13P209901C0 |  | PT-13 ; Wall Prime & 1st coat (PAT RM-2) | 30d | 2012-04-14 | 2012-05-19 | T13P209205C0 |  |  |  |  | 46.53d | 0d | WALL PAINT [415 h]; WALL PAINT [517 m2]; Cost |  |  | T13P209901C0 | PT | C | 13 | P2 | PA | 099 | 01 |  | BILL 10 | B10 | S2 | 01 | R00 | ACF06 |  | 099 | 328 | 956 |  |  |  |  |  |  |  |  |  |  |  |  |
| T13P226005C0 |  | PT-13 ; 2nd Fix, Wiring for Power/Lighting/Emergency (PAT RM-2) | 42d | 2012-04-14 | 2012-06-02 | T13P209205C0 |  |  |  |  | 106.53d | 0d | ELECTRICAL [392.4 h]; Cost |  |  | T13P226005C0 | PT | C | 13 | P2 | ME | 260 | 05 | 2n | BILL 10 | B10 | S2 | 2F | R00 | ACF07 | MEP | 260 |  |  |  |  |  |  |  |  |  |  |  |  |  |  |
| T13P226007C0 |  | PT-13 ; 2nd Fix, Cable Pulling (PAT RM-2) | 48d | 2012-04-14 | 2012-06-09 | T13P209201C0 SS+6d, T13P209205C0 |  |  |  |  | 141.78d | 115.46d | ELECTRICAL [2683.2 h]; Cost |  |  | T13P226007C0 | PT | C | 13 | P2 | ME | 260 | 07 | 2n | BILL 10 | B10 | S2 | 2F | R00 | ACF07 | MEP | 260 |  |  |  |  |  |  |  |  |  |  |  |  |  |  |
| T13P226011C0 |  | PT-13 ; 2nd Fix, Inst of Equipment (DB) (PAT RM-2) | 54d | 2012-04-14 | 2012-06-17 | T13P209205C0 |  |  |  |  | 129.53d | 50.21d | ELECTRICAL [878.4 h]; Cost |  |  | T13P226011C0 | PT | C | 13 | P2 | ME | 260 | 11 | 2n | BILL 10 | B10 | S2 | 2F | R00 | ACF04 | MEP | 260 |  |  |  |  |  |  |  |  |  |  |  |  |  | E |
| T13P226053C0 |  | PT-13 ; 2nd Fix, Wiring / Cabling (PAT RM-2) | 42d | 2012-04-14 | 2012-06-02 | T13P209203C0, T13P209205C0 |  |  |  |  | 58.53d | 32.21d | ELECTRICAL [392.4 h]; Cost |  |  | T13P226053C0 | PT | C | 13 | P2 | ME | 260 | 53 | 2n | BILL 10 | B10 | S2 | 2F | R00 | ACF07 | MEP | 260 | 389 | 977 |  |  |  |  |  |  |  |  |  |  |  |  |
| T13P223015C0 |  | PT-13 ; 2nd Fix, Insulation of CHW pipe & Duct (PAT RM-2) | 48d | 2012-04-16 | 2012-06-11 | T13P223009C0, T13P223017C0, T13P223023C0 |  |  |  |  | 26.32d | 0d | MECHANICAL [3064.8 h]; Cost |  |  | T13P223015C0 | PT | C | 13 | P2 | ME | 230 | 15 | 2n | BILL 10 | B10 | S2 | 2F | R00 | ACF07 | MEP | 230 |  |  |  |  |  |  |  |  |  |  |  |  |  |  |
| T13P205501C0 |  | PT-13 ; Handrails & balustrade (PAT RM-2) | 30.5d | 2012-05-19 | 2012-06-24 | T13P209901C0 |  |  |  |  | 123.03d | 43.71d | SECONDARY STEEL [174 h]; Cost |  |  | T13P205501C0 | PT | C | 13 | P2 | SW | 055 | 01 |  | BILL 10 | B10 | S2 | 01 | R00 | ACF03 |  | a |  |  |  |  |  |  |  |  |  |  |  |  |  |  |
| T13P226015C0 |  | PT-13 ; Final Fix, Termination & Gladding of Cables (PAT RM-2) | 36d | 2012-06-02 | 2012-07-15 | T13P226005C0 |  |  |  |  | 106.53d | 80.21d | ELECTRICAL [148.8 h]; Cost |  |  | T13P226015C0 | PT | C | 13 | P2 | ME | 260 | 15 | FF | BILL 10 | B10 | S2 | FF | R00 | ACF07 | MEP | 260 |  |  |  |  |  |  |  |  |  |  |  |  |  |  |
| T13P209501C0 |  | PT-13 ; Ceiling Grid and Service Tile (PAT RM-2) | 24d | 2012-06-11 | 2012-07-10 | T13P205503C0, T13P209205C0 SS+15d, T13P221117C0, T13P223008C0, T13P223009C0, T13P223015C0, T13P227001C0, T13P226053C0 FF, T13P209901C0 |  |  |  |  | 26.32d | 0d | CEILING GRID FOR GYPSUM [3691.46 h]; CEILING GRID FOR GYPSUM [315.76 m2]; Cost |  |  | T13P209501C0 | PT | C | 13 | P2 | CE | 095 | 01 |  | BILL 10 | B10 | S2 | 01 | R00 | ACF06 |  | 095 | 323 | 952 |  |  |  |  |  |  |  |  |  |  |  |  |
| T13P209510C0 |  | PT-13 ; Patient Lift Ceiling Rail (by others) (PAT RM-2) | 30d | 2012-06-11 | 2012-07-17 | T13P209501C0 SS |  |  |  |  | 109.57d | 83.25d | Labor General [0.2 h]; Cost |  |  | I06P109501C0 | PT | C | 13 | P2 | CE | 095 | 10 |  | BILL 10 | B10 | S2 | 02 | R00 | ACF06 |  | 095 | 323 | 952 |  |  |  |  |  |  |  |  |  |  |  |  |
| T13P209305C0 |  | PT-13 ; Flooring (Terrazzo) (PAT RM-2) | 30d | 2012-07-10 | 2012-08-14 | T13P207103C0, T13P209501C0, T13P205501C0 FF |  |  |  |  | 79.32d | 0d | TERRAZO FLOOR [1073 m2]; TERRAZO FLOOR [1936 h]; Cost |  |  | T13P209305C0 | PT | C | 13 | P2 | FF | 096 | 05 |  | BILL 10 | B10 | S2 | 07 | R00 | ACF06 |  | TZ | 106 | 1000 |  |  |  |  |  |  |  |  |  |  |  |  |
| T13P209601C0 |  | PT-13 ; Flooring (Rubber & etc) (PAT RM-2) | 30d | 2012-07-10 | 2012-08-14 | T13P209501C0 |  |  |  |  | 32.32d | 0d | RUBBER FLOOR [24 h]; RUBBER FLOOR [58 m2]; Cost |  |  | T13P209601C0 | PT | C | 13 | P2 | FF | 096 | 01 |  | BILL 10 | B10 | S2 | 03 | R00 | ACF06 |  | RF | 326 | 955 |  |  |  |  |  |  |  |  |  |  |  |  |
| T13P209905C0 |  | PT-13 ; Ceiling Prime & 1st coat (PAT RM-2) | 30d | 2012-07-10 | 2012-08-14 | T13P209501C0 |  |  |  |  | 109.32d | 0d | CEILING PAINT [28 h]; CEILING PAINT [33 m2]; Cost |  |  | T13P209905C0 | PT | C | 13 | P2 | PA | 099 | 05 |  | BILL 10 | B10 | S2 | 01 | R00 | ACF06 |  | 099 | 330 | 958 |  |  |  |  |  |  |  |  |  |  |  |  |
| T13P221115C0 |  | PT-13 ; 2nd Fix, Inst of Sprinkler droppers (PAT RM-2) | 42d | 2012-07-10 | 2012-08-30 | T13P209501C0 |  |  |  |  | 32.32d | 0d | MECHANICAL [1602 h]; Cost |  |  | T13P221115C0 | PT | C | 13 | P2 | ME | 211 | 15 | 2n | BILL 10 | B10 | S2 | 2F | R00 | ACF07 | MEP | 211 |  |  |  |  |  |  |  |  |  |  |  |  |  |  |
| T13P223021C0 |  | PT-13 ; 2nd Fix, Inst of Flexible Duct & Plenum boxes (PAT RM-2) | 42d | 2012-07-10 | 2012-08-30 | T13P209205C0, T13P209501C0 |  |  |  |  | 32.32d | 0d | MECHANICAL [30 h]; Cost |  |  | T13P223021C0 | PT | C | 13 | P2 | ME | 230 | 21 | 2n | BILL 10 | B10 | S2 | 2F | R00 | ACF07 | MEP | 230 |  |  |  |  |  |  |  |  |  |  |  |  |  |  |
| T13P226017C0 |  | PT-13 ; Final Fix, Inst of Ceiling rose (PAT RM-2) | 36d | 2012-07-10 | 2012-08-23 | T13P209501C0 |  |  |  |  | 26.32d | 0d | ELECTRICAL [61.2 h]; Cost |  |  | T13P226017C0 | PT | C | 13 | P2 | ME | 260 | 17 | FF | BILL 10 | B10 | S2 | FF | R00 | ACF07 | MEP | 260 |  |  |  |  |  |  |  |  |  |  |  |  |  |  |
| T13P227002C0 |  | PT-13 ; 2nd Fix, Wiring Droppers (PAT RM-2) | 42d | 2012-07-10 | 2012-08-30 | T13P209501C0 |  |  |  |  | 26.32d | 0d | ELECTRICAL [392.4 h]; Cost |  |  | T13P227002C0 | PT | C | 13 | P2 | ME | 270 | 02 | 2n | BILL 10 | B10 | S2 | 2F | R00 | ACF07 | MEP | 270 |  |  |  |  |  |  |  |  |  |  |  |  |  |  |
| T13P227020C0 |  | PT-13 ; 2nd Fix, Inst of ELV Equipment (Panels) (PAT RM-2) | 66d | 2012-07-10 | 2012-09-27 | T13P209205C0, T13P209501C0 |  |  |  |  | 79.32d | 0d | ELECTRICAL [1819.2 h]; Cost |  |  | T13P227020C0 | PT | C | 13 | P2 | ME | 270 | 20 | 2n | BILL 10 | B10 | S2 | 2F | R00 | ACF04 | MEP | 270 |  |  |  |  |  |  |  |  |  |  |  |  |  | E |
| T13P240303C0 |  | PT-13 ; Final Fix, Pneumatic Station (PAT RM-2) | 36d | 2012-07-10 | 2012-08-23 | T13P209501C0 |  |  |  |  | 121.32d | 95d | MECHANICAL [2974.8 h]; Cost |  |  | T13P240303C0 | PT | C | 13 | P2 | ME | 403 | 03 | FF | BILL 10 | B10 | S2 | FF | R00 | ACF07 | MEP | 403 |  |  |  |  |  |  |  |  |  |  |  |  |  |  |
| T13P208107C0 |  | PT-13 ; Doors (PAT RM-2) | 36d | 2012-08-14 | 2012-09-27 | T13P208103C0, T13P209501C0, T13P209601C0, T13P209901C0 |  |  |  |  | 73.57d | 0d | ASSORTED DOORS [430 h]; ASSORTED DOORS [43 no]; Cost |  |  | T13P208107C0 | PT | C | 13 | P2 | DO | 081 | 07 |  | BILL 10 | B10 | S2 | DR | R00 | ACF06 |  | 081 | 317 | 948 | 08 |  |  |  |  |  |  |  |  |  |  |  |
| T13P209701C0 |  | PT-13 ; Wall finishes (ST, WD, WC) (PAT RM-2) | 36d | 2012-08-14 | 2012-09-27 | T13P226011C0, T13P227020C0 FF, T13P209501C0, T13P209601C0, T13P209305C0, TAFWA00101M0 |  |  |  |  | 79.32d | 0d | ASSORTED WALL FINISH [369 h]; ASSORTED WALL FINISH [423 m2]; Cost |  |  | T13P209701C0 | PT | C | 13 | P2 | WF | 097 | 01 |  | BILL 10 | B10 | S2 | 01 | R00 | ACF06 |  | 097 | 105 | 1002 |  |  |  |  |  |  |  |  |  |  |  |  |
| T13P209903C0 |  | PT-13 ; Wall Final Paint (PAT RM-2) | 30d | 2012-08-14 | 2012-09-20 | T13P209901C0, T13P209905C0, T13P209501C0 |  |  |  |  | 109.32d | 36d | WALL PAINT [225 h]; WALL PAINT [279 m2]; Cost |  |  | T13P209903C0 | PT | C | 13 | P2 | PA | 099 | 03 |  | BILL 10 | B10 | S2 | 02 | R00 | ACF06 |  | 099 | 329 | 957 |  |  |  |  |  |  |  |  |  |  |  |  |
| T13P222025C0 |  | PT-13 ; Final Fix, Inst of Sanitary Ware (PAT RM-2) | 42d | 2012-08-14 | 2012-10-04 | T13P209205C0, T13P209305C0 |  |  |  |  | 79.32d | 0d | PLUMBING [3361.2 h]; Cost |  |  | T13P222025C0 | PT | C | 13 | P2 | ME | 220 | 25 | FF | BILL 10 | B10 | S2 | FF | R00 | ACF07 | MEP | 220 |  |  |  |  |  |  |  |  |  |  |  |  |  |  |
| T13P206101C0 |  | PT-13 ; Wood / caseworks (PAT RM-2) | 48d | 2012-08-15 | 2012-10-13 | T13CO04407C0, T13P106101C0 SS+5d, T13P209501C0, T13P209601C0, T13P209901C0, TAFWA00101M0 |  |  |  |  | 31.06d | 0d | WOOD WORK/CASEWORK [659.26 no]; WOOD WORK/CASEWORK [1445 h]; Cost |  |  | T13P206101C0 | PT | C | 13 | P2 | WO | 061 | 01 |  | BILL 10 | B10 | S2 | WW | R00 | ACF06 |  | 061 | 332 | 960 |  |  |  |  |  |  |  |  |  |  |  |  |
| T13P206102C0 |  | PT-13 ; Head/Foot Wall (PAT RM-2) | 54d | 2012-08-15 | 2012-10-20 | T13CO04407C0, T13P209501C0, TAFWA00101M0, T13P206101C0 SS |  |  |  |  | 54.06d | 0d | WOOD WORK/CASEWORK [1649 h]; Cost |  |  | T13P206102C0 | PT | C | 13 | P2 | WO | 061 | 02 |  | BILL 10 | B10 | S2 | WW | R00 | ACF06 |  | 061 | 332 | 960 |  |  |  |  |  |  |  |  |  |  |  |  |

| ID | WBS | Activity | Duration | Start | Finish | Predecessors | Total float | Free float | Resources | change id | CCAD BUILDING(SET) | CCAD PHASE(SET) | CCAD FLOOR(SET) | CCAD ZONE(SET) | CCAD WORK(SET) | CCAD SECTION(SET) | CCAD SERIAL No.(SET) | CCAD SUB ZONE MEP(SET) | CCAD CBS(SET) | CCAD BILL(SET) | CCAD HANDOVER(SET) | CCAD TAG(SET) | CCAD REV(SET) | CCADACF (SET) | CCAD CSA | CCAD SSCF | Change Order # | NEW ACTIVITY ID | CCAD DIVISION(SET) | U% | Act Selector % | CCAD MEQ | IDDD |
| --- | --- | --- | --- | --- | --- | --- | --- | --- | --- | --- | --- | --- | --- | --- | --- | --- | --- | --- | --- | --- | --- | --- | --- | --- | --- | --- | --- | --- | --- | --- | --- | --- | --- |
| T13P222021C0 |  | PT-13 ; Final Fix, Terminate Sanitary Ware & Appliances (PAT RM-2) | 42d | 2012-08-23 | 2012-10-11 | T13P222011C0, T13P222025C0 SS+6d | 79.32d | 53d | PLUMBING [3361.2 h]; Cost | T13P222021C0 | PT | C | 13 | P2 | ME | 220 | 21 | FF | BILL 10 | B10 | S2 | FF | R00 | ACF07 | MEP | 220 |  |  |  |  |  |  |  |
| T13P226003C0 |  | PT-13 ; Final Fix, Inst of Light fittings (PAT RM-2) | 48d | 2012-08-23 | 2012-10-18 | T13P209501C0, T13P226017C0 | 26.32d | 0d | ELECTRICAL [7815.6 h]; Cost | T13P226003C0 | PT | C | 13 | P2 | ME | 260 | 03 | FF | BILL 10 | B10 | S2 | FF | R00 | ACF07 | MEP | 260 |  |  |  |  |  |  |  |
| T13P221113C0 |  | PT-13 ; Final Fix, Inst of Sprinklers head/ Extinguisher (PAT RM-2) | 36d | 2012-08-30 | 2012-10-11 | T13P209501C0, T13P221115C0 | 32.32d | 6d | MECHANICAL [234 h]; Cost | T13P221113C0 | PT | C | 13 | P2 | ME | 211 | 13 | FF | BILL 10 | B10 | S2 | FF | R00 | ACF07 | MEP | 211 |  |  |  |  |  |  |  |
| T13P223019C0 |  | PT-13 ; Final Fix, Inst of Grilles & Diffusers (PAT RM-2) | 36d | 2012-08-30 | 2012-10-11 | T13P209501C0, T13P223021C0 | 32.32d | 6d | MECHANICAL [1498.8 h]; Cost | T13P223019C0 | PT | C | 13 | P2 | ME | 230 | 19 | FF | BILL 10 | B10 | S2 | FF | R00 | ACF07 | MEP | 230 |  |  |  |  |  |  |  |
| T13P227030C0 |  | PT-13 ; Final Fix, Inst of ELV device (Detector/Speaker) (PAT RM-2) | 42d | 2012-08-30 | 2012-10-18 | T13P209501C0, T13P227002C0 | 26.32d | 0d | ELECTRICAL [3571.2 h]; Cost | T13P227030C0 | PT | C | 13 | P2 | ME | 270 | 30 | FF | BILL 10 | B10 | S2 | FF | R00 | ACF07 | MEP | 270 |  |  |  |  |  |  |  |
| T13P208709C0 |  | PT-13 ; Ironmongery (PAT RM-2) | 29.75d | 2012-09-27 | 2012-11-04 | T13P208107C0 | 73.57d | 47.25d | IRONMONGERY [610 h]; IRONMONGERY [61 no]; Cost | T13P208709C0 | PT | C | 13 | P2 | DO | 087 | 09 |  | BILL 10 | B10 | S2 | IM | R00 | ACF06 |  | 087 | 322 | 951 | 08 |  |  |  |  |
| T13P211001C0 |  | PT-13 ; Wall Protection (WP, CG, WG, FCG) (PAT RM-2) | 24d | 2012-09-27 | 2012-10-25 | T13P209701C0, T13P209903C0 SS | 79.32d | 53d | FF&E [18 h]; Cost | T13P211001C0 | PT | C | 13 | P2 | WF | 110 | 01 |  | BILL 10 | B10 | S2 | 03 | R00 | ACF08 |  | b | 326 | 1001 |  |  |  |  |  |
| T13P201006C0 |  | PT-13 ; 2nd, Ceiling Inspection by Consultants (PAT RM-2) | 5.25d | 2012-10-18 | 2012-10-24 | T13P221115C0, T13P223009C0, T13P223015C0, T13P227002C0, T13P209501C0, T13P221113C0, T13P223019C0, T13P226015C0, T13P226017C0, T13P226003C0, T13P227030C0 | 26.32d | 0d | Labor General [1.2 h]; Cost | T13P201006C0 | PT | C | 13 | P2 | ME | 010 | 06 | 2n | BILL 10 | B10 | S2 | CI | R00 | ACF07 | MEP | 010 |  |  |  |  |  |  |  |
| T13P222029C0 |  | PT-13 ; Final Fix, Medical Gas pipe (PAT RM-2) | 18d | 2012-10-20 | 2012-11-12 | T13P209501C0, T13P206102C0 | 54.06d | 27.74d | PLUMBING [1149.6 h]; Cost | T13P222029C0 | PT | C | 13 | P2 | ME | 220 | 29 | FF | BILL 10 | B10 | S2 | FF | R00 | ACF07 | MEP | 220 |  |  |  |  |  |  |  |
| T13P209503C0 |  | PT-13 ; Ceiling closure - ACT/Gypsum (PAT RM-2) | 23.75d | 2012-10-24 | 2012-11-25 | T13P201006C0, T13P209510C0, T13P221115C0, T13P226005C0, T13P227001C0, T13P227002C0, TAFOA09513C1 FF, T13P206101C0, T13P223021C0, T13P226007C0 | 26.32d | 0d | ASSORTED CEILING FINISH [416.36 h]; CEILING GYPSUM [103.53 h]; ASSORTED CEILING FINISH [677 m2]; CEILING GYPSUM [316 m2]; Cost | T13P209503C0 | PT | C | 13 | P2 | CE | 095 | 03 |  | BILL 10 | B10 | S2 | 02 | R00 | ACF06 |  | 095 | 324 | 953 |  |  |  |  |  |
| T13P209683C1 |  | PT-13, Carpet Tile Finish (Patient Room-2) | 0d | 2012-11-25 | 2012-11-25 | T13P209903C0 SS, T13P209907C0 SS | 49.45d | 25.5d | Cost |  | PT | C | 13 | P2 | FF | 096 |  |  |  | B10 |  |  | R00 | ACF06 | CPT | CPT |  |  |  |  |  |  |  |
| T13P209907C0 |  | PT-13 ; Ceiling Final paint (PAT RM-2) | 18d | 2012-11-25 | 2012-12-17 | T13P209601C0, T13P209905C0, T13P209503C0 | 38.32d | 0d | CEILING PAINT [15 h]; CEILING PAINT [18 m2]; Cost | T13P209907C0 | PT | C | 13 | P2 | PA | 099 | 07 |  | BILL 10 | B10 | S2 | 02 | R00 | ACF06 |  | 099 | 331 | 959 |  |  |  |  |  |
| T13P211003C0 |  | PT-13 ; FF & E (PAT RM-2) | 18d | 2012-11-25 | 2012-12-17 | T13P209601C0, T13P206101C0, T13P209503C0 | 38.32d | 12d | FF&E [715 h]; Cost | T13P211003C0 | PT | C | 13 | P2 | WO | 110 | 03 |  | BILL 10 | B10 | S2 | 04 | R00 | ACF08 |  | a | 333 | 961 |  |  |  |  |  |
| T13P222027C0 |  | PT-13 ; Final Fix, Inst of All drain (PAT RM-2) | 18d | 2012-11-25 | 2012-12-17 | T13P209305C0, T13P209503C0 | 26.32d | 0d | PLUMBING [1378.8 h]; Cost | T13P222027C0 | PT | C | 13 | P2 | ME | 220 | 27 | FF | BILL 10 | B10 | S2 | FF | R00 | ACF07 | MEP | 220 |  |  |  |  |  |  |  |
| T13P226019C0 |  | PT-13 ; Final Fix, Inst of Switch/Sockets (PAT RM-2) | 18d | 2012-11-25 | 2012-12-17 | T13P209901C0, T13P209503C0 | 26.32d | 0d | ELECTRICAL [362.4 h]; Cost | T13P226019C0 | PT | C | 13 | P2 | ME | 260 | 19 | FF | BILL 10 | B10 | S2 | FF | R00 | ACF07 | MEP | 260 |  |  |  |  |  |  |  |
|  | 10 | **Precommissioning Tesing & snagging (PAT RM-2)** |  | 2012-12-17 | 2013-02-05 |  |  |  |  |  |  |  |  |  |  |  |  |  |  |  |  |  |  |  |  |  |  |  |  |  |  |  |  |
| T13TS01804C0 |  | PT-13 ; MEP de-snag, FIREM sign-off | 12d | 2012-12-17 | 2012-12-31 | T13P222025C0, T13P222027C0, T13P226015C0, T13P222021C0, T13P221113C0, T13P223019C0, T13P240303C0, T13P222029C0, T13P226017C0, T13P226003C0, T13P227030C0, T13P226019C0 | 26.32d | 0d | TESTING & COMMISSIONING [510 h]; Cost | T13TS01801C0 | PT | C | 13 | TS | SC | 018 | 01 |  | BILL 10 | B10 | S2 | 01 | R00 | ACF07 |  | 018 |  |  |  |  |  |  |  |
| T13TS01807C0 |  | PT-13 ; Touch-up & Clean / JV inspection /CIR /De-snag | 18d | 2012-12-31 | 2013-01-22 | T13P206101C0, T13P206102C0, T13P208709C0, T13P209305C0, T13P209601C0, T13P209701C0, T13P209903C0, T13P209907C0, T13P211001C0, T13P211003C0, T13TS01804C0, T13P205501C0, T13P209503C0 | 26.32d | 3.5d | TESTING & COMMISSIONING [128 h]; Cost | T13TS01802C0 | PT | C | 13 | TS | SC | 018 | 02 |  | BILL 10 | B10 | S2 | 02 | R00 | ACF07 |  | 018 |  |  |  |  |  |  |  |
| T13TS01810C0 |  | PT-13 ; Consultant's final de-snag inspection | 7d | 2013-01-28 | 2013-02-05 | T13TS01807C0, T13TS01809C0 | 22.82d | 13.82d | Labor General [1 h]; Cost | T13TS01803C0 | PT | C | 13 | TS | SC | 018 | 03 |  | BILL 10 | B10 | S2 | 03 | R00 | ACF07 |  | 018 |  |  |  |  |  |  |  |
|  | 05 | **TR Room** |  | 2011-10-29 | 2012-10-15 |  |  |  |  |  |  |  |  |  |  |  |  |  |  |  |  |  |  |  |  |  |  |  |  |  |  |  |  |
| T13TR09201C0 |  | PT-13 ; Metal Studs (TR RM) | 18d | 2011-10-29 | 2011-11-21 | T13PA09201C0 SS | 72.5d | 0d | PARTITIONS [231 h]; PARTITIONS - Metal Studs [32 m]; Cost | T13TR09201C0 | PT | C | 13 | TR | PT | 092 | 01 |  | BILL 10 | B10 | S2 | 1F | R00 | ACF06 | GP | 092 | 313 | 885 |  | 0 | PMS |  |  |
| T13TR09203C0 |  | PT-13 ; Partitions 1st face (TR RM) | 24d | 2011-11-22 | 2011-12-21 | T13TR09201C0 | 90.5d | 50d | PARTITIONS [32 m]; PARTITIONS [177 h]; Cost | T13TR09203C0 | PT | C | 13 | TR | PT | 092 | 03 |  | BILL 10 | B10 | S2 | 2F | R00 | ACF06 | GP | 092 | 314 | 886 |  |  | P1F |  |  |
| T13TR26026C0 |  | PT-13 ; 2nd Fix, Conduit (TR RM) | 30d | 2011-11-22 | 2011-12-28 | T13TR09201C0 | 72.5d | 0d | ELECTRICAL [734.4 h]; Cost | T13TR26026C0 | PT | C | 13 | TR | ME | 260 | 26 | 2n | BILL 10 | B10 | S2 | 2F | R00 | ACF07 | MEP | 260 |  |  |  |  |  |  |  |
| T13TR08101C0 |  | PT-13 ; Door Frames (TR RM) | 18d | 2011-12-28 | 2012-01-18 | T13TR09201C0, GNHE08101C0 FS+126d | 97.5d | 57d | ASSORTED DOORS [19 h]; Cost | T13TR08101C0 | PT | C | 13 | TR | DO | 081 | 01 |  | BILL 10 | B10 | S2 | DF | R00 | ACF06 |  | 081 | 316 | 20001090 | 08 |  |  |  |  |
| T13TR01005C0 |  | PT-13 ; 2nd, Wall Inspection by Consultant (TR RM) | 12d | 2011-12-29 | 2012-01-12 | T13TR26026C0 | 72.5d | 32d | Labor General [1.2 h]; Cost | T13TR01005C0 | PT | C | 13 | TR | ME | 010 | 05 | 2n | BILL 10 | B10 | S2 | WI | R00 | ACF07 | MEP | 010 |  |  |  |  |  |  |  |
| T13TR09205C0 |  | PT-13 ; Partitions Closing (TR RM) | 30d | 2012-02-21 | 2012-03-26 | T13TR01005C0, T13TR09201C0, T13TR09203C0, TAFOA09214C1 FF, T13TR08101C0 FF, T13PA09205C0 SS | 40.5d | 0d | PARTITIONS [32 m]; PARTITIONS [235 h]; Cost | T13TR09205C0 | PT | C | 13 | TR | PT | 092 | 05 |  | BILL 10 | B10 | S2 | FF | R00 | ACF06 | GP | 092 | 315 | 887 |  |  | P2F |  |  |
| T13TR09901C0 |  | PT-13 ; Wall Prime & 1st coat (TR RM) | 18d | 2012-03-27 | 2012-04-16 | T13TR09205C0 | 52.5d | 0d | WALL PAINT [37 h]; WALL PAINT [45 m2]; Cost | T13TR09901C0 | PT | C | 13 | TR | PA | 099 | 01 |  | BILL 10 | B10 | S2 | 01 | R00 | ACF06 |  | 099 | 360 | 20001110 |  |  |  |  |  |
| T13TR23009C0 |  | PT-13 ; 2nd Fix, Inst of VAV'S CHW connection (TR RM) | 36d | 2012-03-27 | 2012-05-07 | T13TR09205C0 | 40.5d | 0d | MECHANICAL [1450.8 h]; Cost | T13TR23009C0 | PT | C | 13 | TR | ME | 230 | 09 | 2n | BILL 10 | B10 | S2 | 2F | R00 | ACF07 | MEP | 230 |  |  |  |  |  |  |  |
| T13TR23011C0 |  | PT-13 ; 2nd Fix, Inst of VCD's/FD's (TR RM) | 36d | 2012-03-27 | 2012-05-07 | T13TR09205C0 | 40.5d | 0d | MECHANICAL [1753.2 h]; Cost | T13TR23011C0 | PT | C | 13 | TR | ME | 230 | 11 | 2n | BILL 10 | B10 | S2 | 2F | R00 | ACF07 | MEP | 230 |  |  |  |  |  |  |  |
| T13TR26007C0 |  | PT-13 ; 2nd Fix, Cable Pulling (TR RM) | 36d | 2012-03-27 | 2012-05-07 | T13TR09203C0, T13TR09205C0 | 88.5d | 48d | ELECTRICAL [2683.2 h]; Cost | T13TR26007C0 | PT | C | 13 | TR | ME | 260 | 07 | 2n | BILL 10 | B10 | S2 | 2F | R00 | ACF07 | MEP | 260 |  |  |  |  |  |  |  |
| T13TR26009C0 |  | PT-13 ; 2nd Fix, Inst of Equipment (DB, TR, SG,BUS) (TR RM) | 54d | 2012-03-27 | 2012-05-28 | T13TR09205C0 | 52.5d | 0d | ELECTRICAL [3943.2 h]; Cost | T13TR26009C0 | PT | C | 13 | TR | ME | 260 | 09 | 2n | BILL 10 | B10 | S2 | 2F | R00 | ACF04 | MEP | 260 |  |  |  |  |  | E |  |
| T13TR26027C0 |  | PT-13 ; 2nd Fix, Wiring / Cabling (TR RM) | 30d | 2012-03-27 | 2012-04-30 | T13TR09203C0, T13TR09205C0 | 106.5d | 66d | ELECTRICAL [392.4 h]; Cost | T13TR26027C0 | PT | C | 13 | TR | ME | 260 | 27 | 2n | BILL 10 | B10 | S2 | 2F | R00 | ACF07 | MEP | 260 | 417 | 1318 |  |  |  |  |  |
| T13TR09501C0 |  | PT-13 ; Ceiling Grid and Service Tile (TR RM) | 12d | 2012-04-17 | 2012-04-30 | T13TR09205C0 SS+15d, T13TR09901C0 | 52.5d | 0d | CEILING GRID FOR GYPSUM [297.07 h]; CEILING GRID FOR GYPSUM [25.26 m2]; Cost | T13TR09501C0 | PT | C | 13 | TR | CE | 095 | 01 |  | BILL 10 | B10 | S2 | 01 | R00 | ACF06 |  | 095 | 336 | 1327 |  |  |  |  | 1 |
| T13TR09903C0 |  | PT-13 ; Wall - Final Paint (TR RM) | 12d | 2012-04-17 | 2012-04-30 | T13TR09901C0 | 149.25d | 108.75d | WALL PAINT [20 h]; WALL PAINT [24 m2]; Cost | T13TR09903C0 | PT | C | 13 | TR | PA | 099 | 03 |  | BILL 10 | B10 | S2 | 02 | R00 | ACF06 |  | 099 | 361 | 1312 |  |  |  |  |  |
| T13TR09601C0 |  | PT-13 ; Floor Finishes (TR RM) | 18d | 2012-05-01 | 2012-05-21 | T13TR09501C0 | 52.5d | 0d | ASSORTED FLOOR FINISH [1248 h]; ASSORTED FLOOR FINISH [693 m2]; Cost | T13TR09601C0 | PT | C | 13 | TR | FF | 096 | 01 |  | BILL 10 | B10 | S2 | 01 | R00 | ACF06 |  | FF | 359 | 20001120 |  |  |  |  |  |
| T13TR09905C0 |  | PT-13 ; Ceiling Prime & 1st coat (TR RM) | 18d | 2012-05-01 | 2012-05-21 | T13TR09501C0 | 119.75d | 62d | CEILING PAINT [4 h]; CEILING PAINT [3 m2]; Cost | T13TR09905C0 | PT | C | 13 | TR | PA | 099 | 05 |  | BILL 10 | B10 | S2 | 01 | R00 | ACF06 |  | 099 | 362 | 1313 |  |  |  |  |  |
| T13TR23003C0 |  | PT-13 ; Final Fix, Inst of Grilles & Diffusers (TR RM) | 30d | 2012-05-01 | 2012-06-04 | T13TR09501C0 | 76.5d | 36d | MECHANICAL [1498.8 h]; Cost | T13TR23003C0 | PT | C | 13 | TR | ME | 230 | 03 | FF | BILL 10 | B10 | S2 | FF | R00 | ACF07 | MEP | 230 |  |  |  |  |  |  |  |
| T13TR23023C0 |  | PT-13 ; 2nd Fix, Flexible ducts (TR RM) | 30d | 2012-05-01 | 2012-06-04 | T13TR09205C0, T13TR09501C0 | 76.5d | 36d | MECHANICAL [30 h]; Cost | T13TR23023C0 | PT | C | 13 | TR | ME | 230 | 23 | 2n | BILL 10 | B10 | S2 | 2F | R00 | ACF07 | MEP | 230 | 412 | 20001140 |  |  |  |  |  |
| T13TR23074C0 |  | PT-13 ; Final Fix, Grilles, panels & diffusers (TR RM) | 30d | 2012-05-01 | 2012-06-04 | T13TR09501C0 | 76.5d | 36d | MECHANICAL [1498.8 h]; Cost | T13TR23074C0 | PT | C | 13 | TR | ME | 230 | 74 | FF | BILL 10 | B10 | S2 | FF | R00 | ACF07 | MEP | 230 | 419 | 20001160 |  |  |  |  |  |
| T13TR26005C0 |  | PT-13 ; 2nd Fix, Wiring for Power/Lighting/Emergency (TR RM) | 30d | 2012-05-01 | 2012-06-04 | T13TR26026C0, T13TR09501C0 | 76.5d | 36d | ELECTRICAL [392.4 h]; Cost | T13TR26005C0 | PT | C | 13 | TR | ME | 260 | 05 | 2n | BILL 10 | B10 | S2 | 2F | R00 | ACF07 | MEP | 260 |  |  |  |  |  |  |  |
| T13TR26015C0 |  | PT-13 ; Final Fix, Inst of Ceiling rose (TR RM) | 30d | 2012-05-01 | 2012-06-04 | T13TR09501C0 | 76.5d | 36d | ELECTRICAL [61.2 h]; Cost | T13TR26015C0 | PT | C | 13 | TR | ME | 260 | 15 | FF | BILL 10 | B10 | S2 | FF | R00 | ACF07 | MEP | 260 |  |  |  |  |  |  |  |
| T13TR26019C0 |  | PT-13 ; Final Fix, Inst of Light fittings (TR RM) | 36d | 2012-05-01 | 2012-06-11 | T13TR09501C0 | 70.5d | 30d | ELECTRICAL [7815.6 h]; Cost | T13TR26019C0 | PT | C | 13 | TR | ME | 260 | 19 | FF | BILL 10 | B10 | S2 | FF | R00 | ACF07 | MEP | 260 |  |  |  |  |  |  |  |
| T13TR26076C0 |  | PT-13 ; Final Fix, Lighting fittings (TR RM) | 36d | 2012-05-01 | 2012-06-11 | T13TR09501C0 | 70.5d | 30d | ELECTRICAL [7815.6 h]; Cost | T13TR26076C0 | PT | C | 13 | TR | ME | 260 | 76 | FF | BILL 10 | B10 | S2 | FF | R00 | ACF07 | MEP | 260 | 420 | 20001170 |  |  |  |  |  |
| T13TR27002C0 |  | PT-13 ; 2nd Fix, Dressing of ELV panels (TR RM) | 30d | 2012-05-01 | 2012-06-04 | T13TR09205C0, T13TR27020C0 SS | 58.5d | 0d | ELECTRICAL [273.6 h]; Cost | T13TR27002C0 | PT | C | 13 | TR | ME | 270 | 02 | 2n | BILL 10 | B10 | S2 | 2F | R00 | ACF07 | MEP | 270 |  |  |  |  |  |  |  |
| T13TR27020C0 |  | PT-13 ; 2nd Fix, Inst of ELV Equipment (Panels) (TR RM) | 48d | 2012-05-01 | 2012-06-26 | T13TR09205C0, T13TR09501C0 | 58.5d | 0d | ELECTRICAL [1819.2 h]; Cost | T13TR27020C0 | PT | C | 13 | TR | ME | 270 | 20 | 2n | BILL 10 | B10 | S2 | 2F | R00 | ACF04 | MEP | 270 |  |  |  |  |  | E |  |
| T13TR23013C0 |  | PT-13 ; 2nd Fix, Insulation of CHW pipe & Duct (TR RM) | 48d | 2012-05-08 | 2012-07-03 | T13TR23009C0, T13TR23011C0 | 40.5d | 0d | MECHANICAL [3064.8 h]; Cost | T13TR23013C0 | PT | C | 13 | TR | ME | 230 | 13 | 2n | BILL 10 | B10 | S2 | 2F | R00 | ACF07 | MEP | 230 |  |  |  |  |  |  |  |
| T13TR08105C0 |  | PT-13 ; Doors (TR RM) | 18d | 2012-05-22 | 2012-06-11 | T13TR08101C0, T13TR09501C0, T13TR09601C0, T13TR09901C0 | 97.25d | 0d | ASSORTED DOORS [40 h]; ASSORTED DOORS [4 no]; Cost | T13TR08105C0 | PT | C | 13 | TR | DO | 081 | 05 |  | BILL 10 | B10 | S2 | DR | R00 | ACF06 |  | 081 | 317 | 1325 | 08 |  |  |  |  |
| T13TR21115C0 |  | PT-13 ; 2nd Fix, Gaseous Fire Suppression (TR RM) | 36d | 2012-05-22 | 2012-07-03 | T13TR09601C0 | 52.5d | 12d | MECHANICAL [2626.8 h]; Cost | T13TR21115C0 | PT | C | 13 | TR | ME | 211 | 15 | 2n | BILL 10 | B10 | S2 | 2F | R00 | ACF07 | MEP | 211 | 411 | 20001130 |  |  |  |  |  |
| T13TR26013C0 |  | PT-13 ; Final Fix, Termination & Gladding of Cables (TR RM) | 30d | 2012-05-29 | 2012-07-03 | T13TR26009C0, T13TR09501C0 | 52.5d | 12d | ELECTRICAL [148.8 h]; Cost | T13TR26013C0 | PT | C | 13 | TR | ME | 260 | 13 | FF | BILL 10 | B10 | S2 | FF | R00 | ACF07 | MEP | 260 |  |  |  |  |  |  |  |
| T13TR27030C0 |  | PT-13 ; Final Fix, Inst of ELV device (Detector/Speaker) (TR RM) | 18d | 2012-06-05 | 2012-06-26 | T13TR27002C0, T13TR09501C0 | 58.5d | 18d | ELECTRICAL [3571.2 h]; Cost | T13TR27030C0 | PT | C | 13 | TR | ME | 270 | 30 | FF | BILL 10 | B10 | S2 | FF | R00 | ACF07 | MEP | 270 |  |  |  |  |  |  |  |
| T13TR08709C0 |  | PT-13 ; Ironmongery (TR RM) | 16d | 2012-06-12 | 2012-07-01 | T13TR08105C0 | 97.25d | 56.75d | IRONMONGERY [50 h]; IRONMONGERY [5 no]; Cost | T13TR08709C0 | PT | C | 13 | TR | DO | 087 | 09 |  | BILL 10 | B10 | S2 | IM | R00 | ACF06 |  | 087 | 322 | 20001100 | 08 |  |  |  |  |
| T13TR01006C0 |  | PT-13 ; 2nd, Ceiling Inspection by Consultants (TR RM) | 12d | 2012-07-04 | 2012-07-17 | T13TR23009C0, T13TR23011C0, T13TR23013C0, T13TR26007C0, T13TR09501C0 | 40.5d | 0d | Labor General [1.2 h]; Cost | T13TR01006C0 | PT | C | 13 | TR | ME | 010 | 06 | 2n | BILL 10 | B10 | S2 | CI | R00 | ACF07 | MEP | 010 |  |  |  |  |  |  |  |
| T13TR09503C0 |  | PT-13 ; Ceiling closure (TR RM) | 14d | 2012-07-18 | 2012-08-02 | T13TR01006C0, T13TR09501C0, T13TR21115C0, T13TR26005C0, T13TR26007C0, T13TR26026C0, T13TR26027C0, T13TR23074C0, T13TR23003C0, T13TR26076C0, T13TR26015C0, T13TR26013C0, T13TR26019C0, T13TR27030C0, T13TR23023C0 | 40.5d | 0d | ASSORTED CEILING FINISH [33.21 h]; CEILING GYPSUM [8.2 h]; ASSORTED CEILING FINISH [54 m2]; CEILING GYPSUM [25 m2]; Cost | T13TR09503C0 | PT | C | 13 | TR | CE | 095 | 03 |  | BILL 10 | B10 | S2 | 02 | R00 | ACF06 |  | 095 | 337 | 20001080 |  |  |  |  |  |
| T13TR09907C0 |  | PT-13 ; Ceiling - Final paint (TR RM) | 11.5d | 2012-08-04 | 2012-08-16 | T13TR09905C0, T13TR09503C0 | 57.75d | 17.25d | CEILING PAINT [2 h]; CEILING PAINT [1 m2]; Cost | T13TR09907C0 | PT | C | 13 | TR | PA | 099 | 07 |  | BILL 10 | B10 | S2 | 02 | R00 | ACF06 |  | 099 | 363 | 1314 |  |  |  |  |  |
| T13TR26017C0 |  | PT-13 ; Final Fix, Inst of Switch/Sockets (TR RM) | 12d | 2012-08-04 | 2012-08-16 | T13TR09901C0, T13TR09503C0 | 40.5d | 0d | ELECTRICAL [362.4 h]; Cost | T13TR26017C0 | PT | C | 13 | TR | ME | 260 | 17 | FF | BILL 10 | B10 | S2 | FF | R00 | ACF07 | MEP | 260 |  |  |  |  |  |  |  |
| T13TR01802C0 |  | PT-13 ; MEP de-snag, FIREM sign-off | 16.75d | 2012-08-18 | 2012-09-08 | T13TR26017C0, T13TR23074C0, T13TR23003C0, T13TR26076C0, T13TR26013C0, T13TR26015C0, T13TR26019C0, T13TR27030C0 | 40.5d | 0d | TESTING & COMMISSIONING [255 h]; Cost | S05CO01851C0 | PT | C | 13 | TR | SC | 018 | 53 |  | BILL 10 | B10 | S2 | 01 | R00 | ACF07 |  | 018 |  |  |  |  |  |  |  |
| T13TR01801C0 |  | PT-13 ; Touch-up & Clean / JV inspection /CIR /De-snag | 19.75d | 2012-09-08 | 2012-10-01 | T13TR01802C0, T13TR08709C0, T13TR09601C0, T13TR09903C0, T13TR09907C0, T13TR09503C0 | 40.5d | 0d | TESTING & COMMISSIONING [64 h]; Cost | T13TR01851C0 | PT | C | 13 | TR | SC | 018 | 51 |  | BILL 10 | B10 | S2 | 02 | R00 | ACF07 |  | 018 | 396 |  |  |  |  |  |  |
| T13TR01803C0 |  | PT-13 ; Consultant's final de-snag inspection | 12d | 2012-10-01 | 2012-10-15 | T13TR01801C0 | 40.5d | 24.56d | Labor General [1 h]; Cost | CP3TS01803C0 | PT | C | 13 | TR | SC | 018 | 03 |  | BILL 10 | B10 | S1 | 03 | R00 | ACF07 |  | 018 |  |  |  |  |  |  |  |

| ID | WBS | Activity | Duration | Start | Finish | Predecessors | Complete | Remaining | Planned start | Planned finish | Total float | Free float | Resources | Cost | Actual cost | user_number8 | user_integer1 | user_integer2 | user_number7 | change id | July2011 Target% Complete | Claimed This Month | P_811 | P_711 | U% | CCAD BUILDING(SET) | CCAD PHASE(SET) | CCAD FLOOR(SET) | CCAD ZONE(SET) | CCAD WORK(SET) | CCAD SECTION(SET) | CCAD SERIAL No.(SET) | CCAD SUB ZONE MEP(SET) | CCAD CBS(SET) | CCAD BILL(SET) | CCAD HANDOVER(SET) | CCAD TAG(SET) | CCAD REV(SET) | CCADACF (SET) | CCAD CSA | CCAD SSCF | Act Selector % | Change Order # | NEW ACTIVITY ID | R3 Partitions | CCAD DIVISION(SET) | CCAD MEQ | R3 Finish |
| --- | --- | --- | --- | --- | --- | --- | --- | --- | --- | --- | --- | --- | --- | --- | --- | --- | --- | --- | --- | --- | --- | --- | --- | --- | --- | --- | --- | --- | --- | --- | --- | --- | --- | --- | --- | --- | --- | --- | --- | --- | --- | --- | --- | --- | --- | --- | --- | --- |
|  | 04 | **Public Area ( Elev.Lobby & Corridors )** |  | 2011-08-02 | 2013-01-19 |  |  |  |  |  |  |  |  |  |  |  |  |  |  |  |  |  |  |  |  |  |  |  |  |  |  |  |  |  |  |  |  |  |  |  |  |  |  |  |  |  |  |  |
| T13PA23001C0 |  | PT-13 ; 1st Fix, Inst. of Supports for MEP (Public Area) | 53.88d | 2011-08-02 A | 2011-10-10 | T13CO07807C0 | 85% | 8.08d | 2011-08-15 | 2011-10-18 | 22.82d | 0d | MECHANICAL [800.4 h]; Cost [45150.4 AED] | 45,150.38 | 38,377.83 | 0 | 0 | 0 | 0 | S08PA23001C0 | 25 | 2618.72 | 10 | 0 | 85 | PT | C | 13 | PA | ME | 230 | 01 | 1S | BILL 10 | B10 | S2 | 1F | R00 | ACF04 | MEP | 230 | M1F |  |  |  |  |  |  |
| T13PA09201C0 |  | PT-13 ; Metal Studs (Public Area) | 48d | 2011-08-10 A | 2011-11-29 | T13PA23001C0 SS+12d, TAFCI09202R02 FS+65d, T13PA23001C0 FF | 50% | 24d | 2011-12-13 | 2012-02-08 | 60.5d | 0d | PARTITIONS [5687 h]; PARTITIONS - Metal Studs [789 m]; Cost |  |  | 0 | 0 | 0 | 0 | S08PA09201C0 |  |  | 20 | 0 | 50 | PT | C | 13 | PA | PT | 092 | 01 |  | BILL 10 | B10 | S2 | 1F | R00 | ACF06 | GP | 092 | PMS | 313 | 944 | R3 |  |  |  |
| T13PA09203C0 |  | PT-13 ; Partitions early wall & 1st face (Public Area) | 33d | 2011-08-10 A | 2011-11-29 | T13PA09201C0 SS+12d | 30% | 23.1d | 2011-12-27 | 2012-02-05 | 109.4d | 68.9d | PARTITIONS [789 m]; PARTITIONS [4449 h]; Cost |  |  | 0 | 0 | 0 | 0 | S08PA09203C0 |  |  | 5 | 0 | 30 | PT | C | 13 | PA | PT | 092 | 03 |  | BILL 10 | B10 | S2 | 2F | R00 | ACF06 | GP | 092 | P1F | 314 | 945 |  |  |  |  |
| T13PA26001C0 |  | PT-13 ; 1st Fix, Inst of Trunking/Conduiting (Public Area) | 60d | 2011-10-10 | 2011-12-25 | T13CO07807C0, T13PA23001C0 |  |  |  |  | 22.82d | 0d | ELECTRICAL [4268.4 h]; Cost |  |  |  |  |  |  | S08PA26001C0 | 20 | 13775.7 |  |  |  | PT | C | 13 | PA | ME | 260 | 01 | 1S | BILL 10 | B10 | S2 | 1F | R00 | ACF04 | MEP | 260 | M1F |  |  |  |  |  |  |
| T13PA27010C0 |  | PT-13 ; 1st Fix, Inst of Trunking for ELV system (Public Area) | 54d | 2011-10-20 | 2011-12-28 | T13CO07807C0, T13PA23001C0, T13PA26001C0 SS+9d |  |  |  |  | 22.82d | 0d | ELECTRICAL [3202.8 h]; Cost |  |  |  |  |  |  | S08PA27010C0 |  |  |  |  |  | PT | C | 13 | PA | ME | 270 | 10 | 1S | BILL 10 | B10 | S2 | 1F | R00 | ACF04 | MEP | 270 | M1F |  |  |  |  |  |  |
| T13PA26013C0 |  | PT-13 ; 1st Fix, Inst of Cable Tray (Public Area) | 48d | 2011-10-31 | 2012-01-02 | T13CO07807C0, T13PA23001C0, T13PA27010C0 SS+9d |  |  |  |  | 22.82d | 0d | ELECTRICAL [399.6 h]; Cost |  |  |  |  |  |  | S08PA26013C0 |  |  |  |  |  | PT | C | 13 | PA | ME | 260 | 13 | 1S | BILL 10 | B10 | S2 | 1F | R00 | ACF04 | MEP | 260 | M1F |  |  |  |  |  |  |
| T13PA22019C0 |  | PT-13 ; 1st Fix, Inst of Drainage pipe (ceiling) (Public Area) | 54d | 2011-11-14 | 2012-01-19 | T13PA23001C0, T13PA26013C0 SS+9d |  |  |  |  | 22.82d | 0d | PLUMBING [2326.8 h]; Cost |  |  |  |  |  |  | S08PA22019C0 |  |  |  |  |  | PT | C | 13 | PA | ME | 220 | 19 | 1S | BILL 10 | B10 | S2 | 1F | R00 | ACF04 | MEP | 220 | M1F |  |  |  |  |  |  |
| T13PA22005C0 |  | PT-13 ; 1st Fix, Inst of Water supply pipe (ceiling) (Public Area) | 60d | 2011-11-24 | 2012-02-07 | T13PA22019C0 SS+9d, T13PA23001C0 |  |  |  |  | 22.82d | 0d | PLUMBING [4548 h]; Cost |  |  |  |  |  |  | S08PA22005C0 |  |  |  |  |  | PT | C | 13 | PA | ME | 220 | 05 | 1S | BILL 10 | B10 | S2 | 1F | R00 | ACF04 | MEP | 220 | M1F |  |  |  |  |  |  |
| T13PA22011C0 |  | PT-13 ; 2nd Fix, Drainage/Water pipe (wall) (Public Area) | 42d | 2011-11-30 | 2012-01-19 | T13PA09201C0 |  |  |  |  | 60.5d | 20d | PLUMBING [1378.8 h]; Cost |  |  |  |  |  |  | S08PA22011C0 |  |  |  |  |  | PT | C | 13 | PA | ME | 220 | 11 | 2n | BILL 10 | B10 | S2 | 2F | R00 | ACF07 | MEP | 220 |  |  |  |  |  |  |  |
| T13PA26009C0 |  | PT-13 ; 2nd Fix, Inst of Wall conduites (Public Area) | 42d | 2011-11-30 | 2012-01-19 | T13PA09201C0 |  |  |  |  | 60.5d | 20d | ELECTRICAL [734.4 h]; Cost |  |  |  |  |  |  | S08PA26009C0 | 25 | 4438.43 |  |  |  | PT | C | 13 | PA | ME | 260 | 09 | 2n | BILL 10 | B10 | S2 | 2F | R00 | ACF07 | MEP | 260 |  |  |  |  |  |  |  |
| T13PA21111C0 |  | PT-13 ; 1st Fix, Inst of Sprinkler main pipe (Public Area) | 48d | 2011-12-07 | 2012-02-02 | T13PA22005C0 SS+9d, T13PA23001C0 |  |  |  |  | 22.82d | 0d | MECHANICAL [1236 h]; Cost |  |  |  |  |  |  | S08PA21111C0 |  |  |  |  |  | PT | C | 13 | PA | ME | 211 | 11 | 1S | BILL 10 | B10 | S2 | 1F | R00 | ACF04 | MEP | 211 | M1F |  |  |  |  |  |  |
| T13PA23017C0 |  | PT-13 ; 1st Fix, Inst of CHW pipe (Public Area) | 54d | 2011-12-18 | 2012-02-21 | T13PA21111C0 SS+9d, T13PA23001C0 |  |  |  |  | 22.82d | 0d | MECHANICAL [2467.2 h]; Cost |  |  |  |  |  |  | S08PA23017C0 |  |  |  |  |  | PT | C | 13 | PA | ME | 230 | 17 | 1S | BILL 10 | B10 | S2 | 1F | R00 | ACF04 | MEP | 230 | M1F |  |  |  |  |  |  |
| T13PA23023C0 |  | PT-13 ; 1st Fix, Inst of Main Ducting (Public Area) | 60d | 2011-12-28 | 2012-03-10 | T13PA23001C0, T13PA23017C0 SS+9d |  |  |  |  | 49.82d | 0d | MECHANICAL [8022 h]; Cost |  |  |  |  |  |  | S08PA23023C0 |  |  |  |  |  | PT | C | 13 | PA | ME | 230 | 23 | 1S | BILL 10 | B10 | S2 | 1F | R00 | ACF04 | MEP | 230 | M1F |  |  |  |  |  |  |
| T13PA27001C0 |  | PT-13 ; 1st Fix, Wiring/ Cabling work (Public Area) | 48d | 2012-01-02 | 2012-02-28 | T13PA26001C0, T13PA26013C0, T13PA27010C0 |  |  |  |  | 106.82d | 84d | ELECTRICAL [392.4 h]; Cost |  |  |  |  |  |  | S08PA27001C0 |  |  |  |  |  | PT | C | 13 | PA | ME | 270 | 01 | 1S | BILL 10 | B10 | S2 | 1F | R00 | ACF04 | MEP | 270 | M1F |  |  |  |  |  |  |
| T13PA08103C0 |  | PT-13 ; Door Frames (Public Area) | 36d | 2012-01-09 | 2012-02-20 | T13PA09201C0, GNHE08101C0 FS+126d, T13P208103C0 SS+3d |  |  |  |  | 40.5d | 0d | ASSORTED DOORS [448 h]; Cost |  |  |  |  |  |  | S08PA08103C0 |  |  |  |  |  | PT | C | 13 | PA | DO | 081 | 03 |  | BILL 10 | B10 | S2 | DF | R00 | ACF06 |  | 081 |  | 316 | 947 |  | 08 |  |  |
| T13PA21117C0 |  | PT-13 ; 1st Fix, Inst of Sprinkler branch pipe (Public Area) | 48d | 2012-02-02 | 2012-03-31 | T13PA09201C0, T13PA21111C0 |  |  |  |  | 79.82d | 57d | MECHANICAL [561.6 h]; Cost |  |  |  |  |  |  | S08PA21117C0 |  |  |  |  |  | PT | C | 13 | PA | ME | 211 | 17 | 1S | BILL 10 | B10 | S2 | 1F | R00 | ACF04 | MEP | 211 | M1F |  |  |  |  |  |  |
| T13PA01005C0 |  | PT-13 ; 2nd, Wall Inspection by Consultant (Public Area) | 6d | 2012-02-14 | 2012-02-20 | T13PA08103C0 FF, T13PA22011C0, T13PA26009C0 |  |  |  |  | 40.5d | 0d | Labor General [1.2 h]; Cost |  |  |  |  |  |  | S08PA01005C0 |  |  |  |  |  | PT | C | 13 | PA | ME | 010 | 05 | 2n | BILL 10 | B10 | S2 | WI | R00 | ACF07 | MEP | 010 |  |  |  |  |  |  |  |
| T13PA09205C0 |  | PT-13 ; Partitions Closing (Public Area) | 36d | 2012-02-21 | 2012-04-02 | T13PA01005C0, T13PA09203C0, T13PA22005C0, T13PA22019C0, TAFOA09214C1 FF, TAFCI22011R02 FS+65d, T13PA08103C0 FF |  |  |  |  | 40.5d | 0d | PARTITIONS [789 m]; PARTITIONS [5697 h]; Cost |  |  |  |  |  |  | S08PA09205C0 |  |  |  |  |  | PT | C | 13 | PA | PT | 092 | 05 |  | BILL 10 | B10 | S2 | FF | R00 | ACF06 | GP | 092 | P2F | 315 | 946 | R3 |  |  |  |
| T13PA23009C0 |  | PT-13 ; 2nd Fix, Inst of VAV'S CHW connection (Public Area) | 42d | 2012-02-21 | 2012-04-10 | T13PA23017C0 |  |  |  |  | 22.82d | 0d | MECHANICAL [1450.8 h]; Cost |  |  |  |  |  |  | S08PA23009C0 |  |  |  |  |  | PT | C | 13 | PA | ME | 230 | 09 | 2n | BILL 10 | B10 | S2 | 2F | R00 | ACF07 | MEP | 230 |  |  |  |  |  |  |  |
| T13PA23008C0 |  | PT-13 ; 1st Fix, Inst of VCD's/FD's (Public Area) | 48d | 2012-03-10 | 2012-05-05 | T13PA23023C0 |  |  |  |  | 49.82d | 27d | MECHANICAL [1753.2 h]; Cost |  |  |  |  |  |  | S08PA23008C0 |  |  |  |  |  | PT | C | 13 | PA | ME | 230 | 08 | 1S | BILL 10 | B10 | S2 | 1F | R00 | ACF04 | MEP | 230 | M1F |  |  |  |  |  |  |
| T13PA09901C0 |  | PT-13 ; Wall Prime & 1st coat (Public Area) | 30d | 2012-04-03 | 2012-05-07 | T13PA09205C0 |  |  |  |  | 47.5d | 0d | WALL PAINT [866 h]; WALL PAINT [1080 m2]; Cost |  |  |  |  |  |  | S08PA09901C0 |  |  |  |  |  | PT | C | 13 | PA | PA | 099 | 01 |  | BILL 10 | B10 | S2 | 01 | R00 | ACF06 |  | 099 |  | 328 | 956 |  |  |  |  |
| T13PA26005C0 |  | PT-13 ; 2nd Fix, Wiring for Power/Lighting/Emergency (Public Area) | 42d | 2012-04-03 | 2012-05-21 | T13PA09205C0 |  |  |  |  | 101.5d | 0d | ELECTRICAL [392.4 h]; Cost |  |  |  |  |  |  | S08PA26005C0 |  |  |  |  |  | PT | C | 13 | PA | ME | 260 | 05 | 2n | BILL 10 | B10 | S2 | 2F | R00 | ACF07 | MEP | 260 |  |  |  |  |  |  |  |
| T13PA26007C0 |  | PT-13 ; 2nd Fix, Cable Pulling (Public Area) | 48d | 2012-04-03 | 2012-05-28 | T13PA09201C0 SS+6d, T13PA09205C0 |  |  |  |  | 137.5d | 114.68d | ELECTRICAL [2683.2 h]; Cost |  |  |  |  |  |  | S08PA26007C0 |  |  |  |  |  | PT | C | 13 | PA | ME | 260 | 07 | 2n | BILL 10 | B10 | S2 | 2F | R00 | ACF07 | MEP | 260 |  |  |  |  |  |  |  |
| T13PA26011C0 |  | PT-13 ; 2nd Fix, Inst of Equipment (DB) (Public Area) | 54d | 2012-04-03 | 2012-06-04 | T13PA09205C0 |  |  |  |  | 125.25d | 90.68d | ELECTRICAL [878.4 h]; Cost |  |  |  |  |  |  | S08PA26011C0 |  |  |  |  |  | PT | C | 13 | PA | ME | 260 | 11 | 2n | BILL 10 | B10 | S2 | 2F | R00 | ACF04 | MEP | 260 |  |  |  |  |  | E |  |
| T13PA26053C0 |  | PT-13 ; 2nd Fix, Wiring / Cabling (Public Area) | 42d | 2012-04-03 | 2012-05-21 | T13PA09203C0, T13PA09205C0 |  |  |  |  | 59.5d | 36.68d | ELECTRICAL [392.4 h]; Cost |  |  |  |  |  |  | S08PA26053C0 |  |  |  |  |  | PT | C | 13 | PA | ME | 260 | 53 | 2n | BILL 10 | B10 | S2 | 2F | R00 | ACF07 | MEP | 260 |  | 389 | 977 |  |  |  |  |
| T13PA23015C0 |  | PT-13 ; 2nd Fix, Insulation of CHW pipe & Duct (Public Area) | 48d | 2012-04-10 | 2012-06-05 | T13PA23009C0, T13PA23017C0, T13PA23023C0 |  |  |  |  | 22.82d | 0d | MECHANICAL [3064.8 h]; Cost |  |  |  |  |  |  | S08PA23015C0 |  |  |  |  |  | PT | C | 13 | PA | ME | 230 | 15 | 2n | BILL 10 | B10 | S2 | 2F | R00 | ACF07 | MEP | 230 |  |  |  |  |  |  |  |
| T13PA05501C0 |  | PT-13 ; Handrails & balustrade (Public Area) | 36d | 2012-05-08 | 2012-06-19 | T13PA09901C0, TAFT105509C0, TAFT805509C0 |  |  |  |  | 71.25d | 12.68d | SECONDARY STEEL [356 h]; Cost |  |  |  |  |  |  | S08PA05501C0 |  |  |  |  |  | PT | C | 13 | PA | SW | 055 | 01 |  | BILL 10 | B10 | S2 | 01 | R00 | ACF03 |  | a |  |  |  |  |  |  |  |
| T13PA26015C0 |  | PT-13 ; Final Fix, Termination & Gladding of Cables (Public Area) | 36d | 2012-05-22 | 2012-07-03 | T13PA26005C0 |  |  |  |  | 101.5d | 78.68d | ELECTRICAL [148.8 h]; Cost |  |  |  |  |  |  | S08PA26015C0 |  |  |  |  |  | PT | C | 13 | PA | ME | 260 | 15 | FF | BILL 10 | B10 | S2 | FF | R00 | ACF07 | MEP | 260 |  |  |  |  |  |  |  |
| T13PA09501C0 |  | PT-13 ; Ceiling Grid and Service Tile (Public Area) | 24d | 2012-06-05 | 2012-07-04 | T13PA09205C0 SS+15d, T13PA21117C0, T13PA23008C0, T13PA23009C0, T13PA23015C0, T13PA27001C0, TAFCI22022R02 FS+65d, T13PA26053C0 FF, T13PA09901C0 |  |  |  |  | 22.82d | 0d | CEILING GRID FOR GYPSUM [7543.63 h]; CEILING GRID FOR GYPSUM [645.55 m2]; Cost |  |  |  |  |  |  | S08PA09501C0 |  |  |  |  |  | PT | C | 13 | PA | CE | 095 | 01 |  | BILL 10 | B10 | S2 | 01 | R00 | ACF06 |  | 095 |  | 323 | 952 |  |  |  | R3 |
| T13PA09601C0 |  | PT-13 ; Flooring (Rubber & etc) (Public Area) | 30d | 2012-07-04 | 2012-08-08 | TAFCI22022R02 FS+65d, T13PA09501C0 |  |  |  |  | 58.57d | 0d | RUBBER FLOOR [48 h]; RUBBER FLOOR [120 m2]; Cost |  |  |  |  |  |  | S08PA09601C0 |  |  |  |  |  | PT | C | 13 | PA | FF | 096 | 01 |  | BILL 10 | B10 | S2 | 03 | R00 | ACF06 |  | RF |  | 326 | 955 |  |  |  | R3 |
| T13PA09602C0 |  | PT-13 ; Flooring (Stone) (Public Area) | 30d | 2012-07-04 | 2012-08-08 | TAFCI22022R02 FS+65d, T13PA09501C0, T13PA05501C0 |  |  |  |  | 58.57d | 0d | STONE FLOOR [27 m2]; STONE FLOOR [24 h]; Cost |  |  |  |  |  |  | S08PA09601C0 |  |  |  |  |  | PT | C | 13 | PA | FF | 096 | 01 |  | BILL 10 | B10 | S2 | 09 | R00 | ACF06 |  | ST |  | 326 | 955 |  |  |  | R3 |
| T13PA09905C0 |  | PT-13 ; Ceiling Prime & 1st coat (Public Area) | 30d | 2012-07-04 | 2012-08-08 | T13PA09501C0 |  |  |  |  | 100.57d | 0d | CEILING PAINT [55 h]; CEILING PAINT [67 m2]; Cost |  |  |  |  |  |  | S08PA09905C0 |  |  |  |  |  | PT | C | 13 | PA | PA | 099 | 05 |  | BILL 10 | B10 | S2 | 01 | R00 | ACF06 |  | 099 |  | 330 | 958 |  |  |  |  |
| T13PA21115C0 |  | PT-13 ; 2nd Fix, Inst of Sprinkler droppers (Public Area) | 42d | 2012-07-04 | 2012-08-25 | T13PA09501C0 |  |  |  |  | 22.82d | 0d | MECHANICAL [1602 h]; Cost |  |  |  |  |  |  | S08PA21115C0 |  |  |  |  |  | PT | C | 13 | PA | ME | 211 | 15 | 2n | BILL 10 | B10 | S2 | 2F | R00 | ACF07 | MEP | 211 |  |  |  |  |  |  |  |
| T13PA23021C0 |  | PT-13 ; 2nd Fix, Inst of Flexible Duct & Plenum boxes (Public Area) | 42d | 2012-07-04 | 2012-08-25 | T13PA09205C0, T13PA09501C0 |  |  |  |  | 22.82d | 0d | MECHANICAL [30 h]; Cost |  |  |  |  |  |  | S08PA23021C0 |  |  |  |  |  | PT | C | 13 | PA | ME | 230 | 21 | 2n | BILL 10 | B10 | S2 | 2F | R00 | ACF07 | MEP | 230 |  |  |  |  |  |  |  |
| T13PA26017C0 |  | PT-13 ; Final Fix, Inst of Ceiling rose (Public Area) | 36d | 2012-07-04 | 2012-08-15 | T13PA09501C0 |  |  |  |  | 46.82d | 0d | ELECTRICAL [61.2 h]; Cost |  |  |  |  |  |  | S08PA26017C0 |  |  |  |  |  | PT | C | 13 | PA | ME | 260 | 17 | FF | BILL 10 | B10 | S2 | FF | R00 | ACF07 | MEP | 260 |  |  |  |  |  |  |  |
| T13PA27002C0 |  | PT-13 ; 2nd Fix, Wiring Droppers (Public Area) | 42d | 2012-07-04 | 2012-08-25 | T13PA09501C0 |  |  |  |  | 52.82d | 0d | ELECTRICAL [392.4 h]; Cost |  |  |  |  |  |  | S08PA27002C0 |  |  |  |  |  | PT | C | 13 | PA | ME | 270 | 02 | 2n | BILL 10 | B10 | S2 | 2F | R00 | ACF07 | MEP | 270 |  |  |  |  |  |  |  |
| T13PA27020C0 |  | PT-13 ; 2nd Fix, Inst of ELV Equipment (Panels) (Public Area) | 66d | 2012-07-04 | 2012-09-22 | T13PA09205C0, T13PA09501C0 |  |  |  |  | 34.57d | 0d | ELECTRICAL [1819.2 h]; Cost |  |  |  |  |  |  | S08PA27020C0 |  |  |  |  |  | PT | C | 13 | PA | ME | 270 | 20 | 2n | BILL 10 | B10 | S2 | 2F | R00 | ACF04 | MEP | 270 |  |  |  |  |  | E |  |
| T13PA26003C0 |  | PT-13 ; Final Fix, Inst of Light fittings (Public Area) | 48d | 2012-07-11 | 2012-09-08 | T13PA09501C0, T13PA26017C0 SS+6d |  |  |  |  | 46.82d | 24d | ELECTRICAL [7815.6 h]; Cost |  |  |  |  |  |  | S08PA26003C0 |  |  |  |  |  | PT | C | 13 | PA | ME | 260 | 03 | FF | BILL 10 | B10 | S2 | FF | R00 | ACF07 | MEP | 260 |  |  |  |  |  |  |  |
| T13PA27030C0 |  | PT-13 ; Final Fix, Inst of ELV devise (Detector/Speaker) (Public Area) | 42d | 2012-07-11 | 2012-09-01 | T13PA09501C0, T13PA27002C0 SS+6d |  |  |  |  | 52.82d | 30d | ELECTRICAL [3571.2 h]; Cost |  |  |  |  |  |  | S08PA27030C0 |  |  |  |  |  | PT | C | 13 | PA | ME | 270 | 30 | FF | BILL 10 | B10 | S2 | FF | R00 | ACF07 | MEP | 270 |  |  |  |  |  |  |  |
| T13PA08107C0 |  | PT-13 ; Doors (Public Area) | 36d | 2012-08-08 | 2012-09-22 | T13PA08103C0, T13PA09501C0, T13PA09601C0, T13PA09901C0, T13PA09602C0 |  |  |  |  | 58.57d | 0d | ASSORTED DOORS [900 h]; ASSORTED DOORS [90 no]; Cost |  |  |  |  |  |  | S08PA08107C0 |  |  |  |  |  | PT | C | 13 | PA | DO | 081 | 07 |  | BILL 10 | B10 | S2 | DR | R00 | ACF06 |  | 081 |  | 317 | 948 |  | 08 |  |  |
| T13PA09903C0 |  | PT-13 ; Wall Final Paint (Public Area) | 30d | 2012-08-08 | 2012-09-15 | T13PA09901C0, T13PA09905C0, T13PA09501C0 |  |  |  |  | 100.57d | 72d | WALL PAINT [467 h]; WALL PAINT [581 m2]; Cost |  |  |  |  |  |  | S08PA09903C0 |  |  |  |  |  | PT | C | 13 | PA | PA | 099 | 03 |  | BILL 10 | B10 | S2 | 02 | R00 | ACF06 |  | 099 |  | 329 | 957 |  |  |  |  |
| T13PA21113C0 |  | PT-13 ; Final Fix, Inst of Sprinklers head/ Extinguisher (Public Area) | 36d | 2012-08-25 | 2012-10-06 | T13PA09501C0, T13PA21115C0 |  |  |  |  | 22.82d | 0d | MECHANICAL [234 h]; Cost |  |  |  |  |  |  | S08PA21113C0 |  |  |  |  |  | PT | C | 13 | PA | ME | 211 | 13 | FF | BILL 10 | B10 | S2 | FF | R00 | ACF07 | MEP | 211 |  |  |  |  |  |  |  |
| T13PA23019C0 |  | PT-13 ; Final Fix, Inst of Grilles & Diffusers (Public Area) | 36d | 2012-08-25 | 2012-10-06 | T13PA09501C0, T13PA23021C0 |  |  |  |  | 22.82d | 0d | MECHANICAL [1498.8 h]; Cost |  |  |  |  |  |  | S08PA23019C0 |  |  |  |  |  | PT | C | 13 | PA | ME | 230 | 19 | FF | BILL 10 | B10 | S2 | FF | R00 | ACF07 | MEP | 230 |  |  |  |  |  |  |  |
| T13PA08709C0 |  | PT-13 ; Ironmongery (Public Area) | 36d | 2012-09-22 | 2012-11-05 | T13PA08107C0 |  |  |  |  | 58.57d | 35.75d | IRONMONGERY [1280 h]; IRONMONGERY [128 no]; Cost |  |  |  |  |  |  | S08PA08709C0 |  |  |  |  |  | PT | C | 13 | PA | DO | 087 | 09 |  | BILL 10 | B10 | S2 | IM | R00 | ACF06 |  | 087 |  | 322 | 951 |  | 08 |  |  |
| T13PA09701C0 |  | PT-13 ; Wall finishes (ST, WD, WC) (Public Area) | 36d | 2012-09-22 | 2012-11-05 | T13PA26011C0, T13PA27020C0, TVT0114211C0, TVT0214211C0, TVT0714211C0, TVT3114211C0, TVT3214255C0, TVT3314245C0, TAFCI22022R02 FS+164d, T13PA09501C0, T13PA09601C0, T13PA09602C0 |  |  |  |  | 34.57d | 0d | ASSORTED WALL FINISH [764 h]; ASSORTED WALL FINISH [878 m2]; Cost |  |  |  |  |  |  | S08PA09701C0 |  |  |  |  |  | PT | C | 13 | PA | WF | 097 | 01 |  | BILL 10 | B10 | S2 | 01 | R00 | ACF06 |  | 097 |  | 105 | 1002 |  |  |  |  |
| T13PA09702C0 |  | PT-13 ; Ceramic Wall Tiles (Public Area) | 6.88d | 2012-09-22 | 2012-09-30 | T13PA26011C0, T13PA27020C0, TVT0114211C0, TVT0214211C0, TVT0714211C0, TVT3114211C0, TVT3214255C0, TVT3314245C0, T13PA09501C0 |  |  |  |  | 87.7d | 64.88d | ASSORTED WALL FINISH [1049 h]; ASSORTED WALL FINISH [201 m2]; Cost |  |  |  |  |  |  | S08PA09701C0 |  |  |  |  |  | PT | C | 13 | PA | WF | 097 | 01 |  | BILL 10 | B10 | S2 | 04 | R00 | ACF06 |  | 097 |  | 105 | 1002 |  |  |  |  |
| T13PA01006C0 |  | PT-13 ; 2nd, Ceiling Inspection by Consultants (Public Area) | 6d | 2012-10-06 | 2012-10-13 | T13PA21115C0, T13PA23009C0, T13PA23015C0, T13PA27002C0, T13PA09501C0, T13PA21113C0, T13PA23019C0, T13PA26015C0, T13PA26017C0, T13PA26003C0, T13PA27030C0 |  |  |  |  | 22.82d | 0d | Labor General [1.2 h]; Cost |  |  |  |  |  |  | S08PA01006C0 |  |  |  |  |  | PT | C | 13 | PA | ME | 010 | 06 | 2n | BILL 10 | B10 | S2 | CI | R00 | ACF07 | MEP | 010 |  |  |  |  |  |  |  |
| T13PA09503C0 |  | PT-13 ; Ceiling closure - ACT/Gypsum (Public Area) | 26d | 2012-10-13 | 2012-11-14 | T13PA01006C0, T13PA21115C0, T13PA26005C0, T13PA27001C0, T13PA27002C0, TAFOA09513C1 FF, T13PA23021C0, T13PA26007C0 |  |  |  |  | 22.82d | 0d | ASSORTED CEILING FINISH [851.77 h]; CEILING GYPSUM [211.76 h]; ASSORTED CEILING FINISH [1385 m2]; CEILING GYPSUM [646 m2]; Cost |  |  |  |  |  |  | S08PA09503C0 |  |  |  |  |  | PT | C | 13 | PA | CE | 095 | 03 |  | BILL 10 | B10 | S2 | 02 | R00 | ACF06 |  | 095 |  | 324 | 953 |  |  |  | R3 |
| T13PA11001C0 |  | PT-13 ; Wall Protection (WP, CG, WG, FCG) (Public Area) | 24d | 2012-11-05 | 2012-12-05 | T13PA09701C0, T13PA09903C0 SS |  |  |  |  | 34.57d | 11.75d | FF&E [42 h]; Cost |  |  |  |  |  |  | S08PA11001C0 |  |  |  |  |  | PT | C | 13 | PA | WF | 110 | 01 |  | BILL 10 | B10 | S2 | 03 | R00 | ACF08 |  | b |  | 326 | 1001 |  |  |  |  |
| T13PA11009C0 |  | PT-13 ; Signage (Public Area) | 18d | 2012-11-05 | 2012-11-27 | T13PA09701C0 |  |  |  |  | 40.57d | 17.75d | SIGNAGES [173 h]; SIGNAGES [172.58 no]; Cost |  |  |  |  |  |  | S08PA11009C0 |  |  |  |  |  | PT | C | 13 | PA | SA | 110 | 09 |  | BILL 10 | B10 | S2 | 09 | R00 | ACF08 |  | c |  | 322 | 951 |  | 08 |  |  |
| T13PA09907C0 |  | PT-13 ; Ceiling Final paint (Public Area) | 18d | 2012-11-14 | 2012-12-08 | T13PA09601C0, T13PA09905C0, T13PA09602C0, T13PA09503C0 |  |  |  |  | 32.57d | 9.75d | CEILING PAINT [29 h]; CEILING PAINT [36 m2]; Cost |  |  |  |  |  |  | S08PA09907C0 |  |  |  |  |  | PT | C | 13 | PA | PA | 099 | 07 |  | BILL 10 | B10 | S2 | 02 | R00 | ACF06 |  | 099 |  | 331 | 959 |  |  |  |  |
| T13PA26019C0 |  | PT-13 ; Final Fix, Inst of Switch/Sockets (Public Area) | 18d | 2012-11-14 | 2012-12-08 | T13PA09901C0, T13PA09503C0 |  |  |  |  | 22.82d | 0d | ELECTRICAL [362.4 h]; Cost |  |  |  |  |  |  | S08PA26019C0 |  |  |  |  |  | PT | C | 13 | PA | ME | 260 | 19 | FF | BILL 10 | B10 | S2 | FF | R00 | ACF07 | MEP | 260 |  |  |  |  |  |  |  |

| ID | WBS | Activity | Duration | Start | Finish | Predecessors | Complete | Remaining | Planned start | Planned finish | Total float | Free float | Resources | Cost | Actual cost | change id | CCAD BUILDING(SET) | CCAD PHASE(SET) | CCAD FLOOR(SET) | CCAD ZONE(SET) | CCAD WORK(SET) | CCAD SECTION(SET) | CCAD SERIAL No.(SET) | CCAD CBS(SET) | CCAD BILL(SET) | CCAD HANDOVER(SET) | CCAD TAG(SET) | CCAD REV(SET) | CCADACF (SET) | CCAD SSCF | RENZ % COMPLETE | Phase | Area/ Department | Grids | Are | Weight & Nos | Process | Levels | Claimed This Month | CCAD CSA | P_811 | P_711 | U% | July2011 Target% Complete | CCAD SUB ZONE MEP(SET) | Act Selector % | Change Order # | NEW ACTIVITY ID | CCAD DIVISION(SET) | CCAD MEQ |
| --- | --- | --- | --- | --- | --- | --- | --- | --- | --- | --- | --- | --- | --- | --- | --- | --- | --- | --- | --- | --- | --- | --- | --- | --- | --- | --- | --- | --- | --- | --- | --- | --- | --- | --- | --- | --- | --- | --- | --- | --- | --- | --- | --- | --- | --- | --- | --- | --- | --- | --- |
|  | 10 | **Precommissioning Tesing & snagging (Public Area)** |  | 2012-12-08 | 2013-01-19 |  |  |  |  |  |  |  |  |  |  |  |  |  |  |  |  |  |  |  |  |  |  |  |  |  |  |  |  |  |  |  |  |  |  |  |  |  |  |  |  |  |  |  |  |  |
| T13TS01805C0 |  | PT-13 ; MEP de-snag, FIREM sign-off | 9.75d | 2012-12-08 | 2012-12-19 | T13PA26015C0, T13PA21113C0, T13PA23019C0, T13PA26017C0, T13PA26003C0, T13PA27030C0, T13PA26019C0 |  |  |  |  | 22.82d | 0d | TESTING & COMMISSIONING [510 h]; Cost |  |  | T13TS01801C0 | PT | C | 13 | TS | SC | 018 | 01 | BILL 10 | B10 | S2 | 01 | R00 | ACF07 | 018 |  |  |  |  |  |  |  |  |  |  |  |  |  |  |  |  |  |  |  |  |
| T13TS01808C0 |  | PT-13 ; Touch-up & Clean / JV inspection /CIR /De-snag | 17.88d | 2012-12-19 | 2013-01-10 | T13PA08709C0, T13PA09601C0, T13PA09701C0, T13PA09903C0, T13PA09907C0, T13PA11001C0, T13PA11009C0, T13TS01805C0, T13PA05501C0, T13PA09602C0, T13PA09702C0, T13PA09503C0 |  |  |  |  | 22.82d | 0d | TESTING & COMMISSIONING [128 h]; Cost |  |  | T13TS01802C0 | PT | C | 13 | TS | SC | 018 | 02 | BILL 10 | B10 | S2 | 02 | R00 | ACF07 | 018 |  |  |  |  |  |  |  |  |  |  |  |  |  |  |  |  |  |  |  |  |
| T13TS01811C0 |  | PT-13 ; Consultant's final de-snag inspection | 7d | 2013-01-10 | 2013-01-19 | T13TS01808C0 |  |  |  |  | 22.82d | 0d | Labor General [1 h]; Cost |  |  | T13TS01803C0 | PT | C | 13 | TS | SC | 018 | 03 | BILL 10 | B10 | S2 | 03 | R00 | ACF07 | 018 |  |  |  |  |  |  |  |  |  |  |  |  |  |  |  |  |  |  |  |  |
|  | 14 | **Level 14** |  | 2011-02-21 | 2013-02-14 |  |  |  |  |  |  |  |  |  |  |  |  |  |  |  |  |  |  |  |  |  |  |  |  |  |  |  |  |  |  |  |  |  |  |  |  |  |  |  |  |  |  |  |  |  |
|  | 01 | **Structure & Envelopment** |  | 2011-02-21 | 2012-04-15 |  |  |  |  |  |  |  |  |  |  |  |  |  |  |  |  |  |  |  |  |  |  |  |  |  |  |  |  |  |  |  |  |  |  |  |  |  |  |  |  |  |  |  |  |  |
| T14SA03301C0 |  | PT-14 ; Corewall Concrete (Zone SA) | 4d | 2011-02-21 A | 2011-02-26 A | T13SA03301C0 | 100% |  | 2011-03-15 | 2011-03-20 |  |  | CONCRETE [6280 h]; CONCRETE [158 m3]; Cost |  |  | T14SA03301C0 | PT | C | 14 | SA | CT | 033 | 01 | BILL 10 | B10 | S2 | 04 | R00 | ACF03 | 033 | 100 | Z2 | PA | TRUS | D | A10 | EREC | 10FLR |  |  |  |  |  |  |  |  |  |  |  |  |
| T14SB03303C0 |  | PT-14 ; Corewall Concrete (Zone SB) | 4d | 2011-03-10 A | 2011-03-14 A | T13SB03303C0 | 100% |  | 2011-03-21 | 2011-03-26 |  |  | CONCRETE [6280 h]; CONCRETE [158 m3]; Cost |  |  | T14SB03303C0 | PT | C | 14 | SB | CT | 033 | 03 | BILL 10 | B10 | S2 | 04 | R00 | ACF03 | 033 | 100 | Z2 | PA | TRUS | D | A10 | EREC | 10FLR |  |  |  |  |  |  |  |  |  |  |  |  |
| T14CO05103C0 |  | PT-14 ; Alignment & welding of 14th Floor (Common Zone) | 3d | 2011-05-24 A | 2011-06-07 A | T14CO05101C0 | 100% |  | 2011-07-03 | 2011-07-06 |  |  | STRUCTURAL STEEL [1152 h]; Cost |  |  | T14CO05103C0 | PT | C | 14 | CO | ST | 051 | 03 | BILL 10 | B10 | S2 | 02 | R00 | ACF03 | 051 | 20 | Z2 | PA | 10TH | E | A12A | EREC | 11FLR | 371013.72 | ST |  |  |  |  |  |  |  |  |  |  |
| T14CO05101C0 |  | PT-14 ; Erection of Structural Steel of 14 th Floor (Common Zone) | 4d | 2011-05-25 A | 2011-06-05 A | T13CO05103C0, T14SA03301C0, T14SB03303C0 | 100% |  | 2011-06-26 | 2011-07-02 |  |  | STRUCTURAL STEEL [11643 h]; STRUCTURAL STEEL [380 T(Fe)]; Cost |  |  | T14CO05101C0 | PT | C | 14 | CO | ST | 051 | 01 | BILL 10 | B10 | S2 | 01 | R00 | ACF03 | 051 | 80 | Z2 | PA | 10TH | E | A12A | EREC | 11FLR | 834404.99 | ST |  |  |  |  |  |  |  |  |  |  |
| T14CO05305C0 |  | PT-14 ; Metal Decking 14 FLR (Common Zone) | 12d | 2011-06-01 A | 2011-07-31 A | T14CO05103C0, T15CO05101C0 | 100% |  | 2011-06-12 | 2011-06-26 |  |  | METAL DECKING [2760 h]; METAL DECKING [3493 m2]; Cost |  |  | T14CO05305C0 | PT | C | 14 | CO | ST | 053 | 05 | BILL 10 | B10 | S2 | 03 | R00 | ACF03 | 053 |  | Z2 | PA | 10TH | E | A12A | MDEC | 11FLR | 223191.54 | ST |  |  |  |  |  |  |  |  |  |  |
| T14CO03399C0 |  | PT-14 ; Concrete on Metal Decking 14 FLR (Common Zone) | 10d | 2011-07-10 A | 2011-07-21 A | T14CO05305C0 | 100% |  |  |  |  |  | CONCRETE [23776 h]; CONCRETE [598 m3]; Cost |  |  | T14CO05335C0 | PT | C | 14 | CO | CT | 033 | 99 | BILL 10 | B10 | S2 | 08 | R00 | ACF03 | 033 |  | Z2 | PA | 10TH | E | A12A | MDEC | 11FLR |  |  | 100 | 90 |  |  |  |  |  |  |  |  |
| T14CO07807C0 |  | PT-14 ; Cementitious Fire proofing Lvl 14 (Common Zone) | 12d | 2011-08-10 A | 2011-10-02 | T15CO03399C0 | 95% | 0.6d | 2011-08-01 | 2011-08-14 | 14.34d | 0d | CEMENTITIOUS FIREPROOFING [3066 h]; CEMENTITIOUS FIREPROOFING [6132 m2]; Cost |  |  | T14CO07807C0 | PT | C | 14 | CO | ST | 078 | 07 | BILL 10 | B10 | S2 | 04 | R00 | ACF03 | 078 |  | Z2 | PA | 10TH | E | A12A | FIRE | 11FLR |  | ST | 95 | 0 | 95 |  |  |  |  |  |  |  |
| T14CO04403C0 |  | PT-14 ; C2 Bracket (Common Zone) | 30d | 2011-09-05 A | 2011-12-17 | T14CO07807C0, T13CO04403C0 SS, T15CO04403C0 SS | 12% | 26.4d | 2011-11-17 | 2011-12-25 | 63.03d | 0d | FACADE CURTAIN WALL 2 [522.3 h]; Cost |  |  | T14CO04403C0 | PT | C | 14 | CO | FA | 044 | 03 | BILL 10 | B10 | S2 | FC2 | R00 | ACF05 | 044 |  |  |  |  |  |  |  |  |  | FA |  |  |  |  |  |  |  |  |  |  |
| T14CO04405C0 |  | PT-14 ; C2 Transom & Mullion (Common Zone) | 30d | 2011-11-14 | 2011-12-21 | T14CO04403C0 SS+14d |  |  |  |  | 63.03d | 0d | FACADE CURTAIN WALL 2 [2088.7 h]; Cost |  |  | T14CO04405C0 | PT | C | 14 | CO | FA | 044 | 05 | BILL 10 | B10 | S2 | FC2 | R00 | ACF05 | 044 |  |  |  |  |  |  |  |  |  | FA |  |  |  |  |  |  |  |  |  |  |
| T14CO04407C0 |  | PT-14 ; C2 Glazing (Common Zone) | 30d | 2011-11-14 | 2011-12-21 | T14CO04405C0 SS, T14CO04405C0 FF |  |  |  |  | 63.03d | 0d | FACADE CURTAIN WALL 2 [4766.9 h]; FACADE CURTAIN WALL 2 [1742 m2]; FACADE TOTAL QUANTITY m2 [1742 m2]; Cost |  |  | T14CO04407C0 | PT | C | 14 | CO | FA | 044 | 07 | BILL 10 | B10 | S2 | FC2 | R00 | ACF05 | 044 |  |  |  |  |  |  |  |  |  | FA |  |  |  |  |  |  |  |  |  |  |
| T14CO04415C0 |  | PT-14 ; SG Catwalk Installation (Common Zone) | 52d | 2012-02-14 | 2012-04-15 | TEXCO04405C0 SS+14d, T13CO04415C0 SS |  |  |  |  | 50.02d | 0d | Labor General [4687.6 h]; Cost |  |  | I05CO04411C0 | PT | C | 14 | CO | FA | 044 | 11 | BILL 10 | B10 | S2 | SG | R00 | ACF05 | 044 |  |  |  |  |  |  |  |  |  | FA |  |  |  |  |  |  |  |  |  |  |
|  | 02 | **PAT RM-1** |  | 2011-08-02 | 2013-02-03 |  |  |  |  |  |  |  |  |  |  |  |  |  |  |  |  |  |  |  |  |  |  |  |  |  |  |  |  |  |  |  |  |  |  |  |  |  |  |  |  |  |  |  |  |  |
| T14P123001C0 |  | PT-14 ; 1st Fix, Inst. of Supports for MEP (PAT RM-1) | 53.88d | 2011-08-02 A | 2011-12-01 | T14CO07807C0 | 10% | 48.49d | 2011-08-15 | 2011-10-18 | 24.79d | 0d | MECHANICAL [4027.2 h]; Cost [45150.4 AED] | 45,150.38 | 4,515.04 | T14P123001C0 | PT | C | 14 | P1 | ME | 230 | 01 | BILL 10 | B10 | S2 | 1F | R00 | ACF04 | 230 |  |  |  |  |  |  |  |  | 13171.63 | MEP | 10 | 0 |  | 25 | 1S | M1F |  |  |  |  |
| T14P109201C0 |  | PT-14 ; Metal Studs (PAT RM-1) | 42d | 2011-09-05 A | 2011-12-21 | T14P123001C0 SS, T14CO04407C0 FF, T14CO04405C0 FF, T14P123001C0 FF | 25% | 31.5d | 2011-11-20 | 2012-01-11 | 64.78d | 0d | PARTITIONS [3551 h]; PARTITIONS - Metal Studs [493 m]; Cost |  |  | T14P109201C0 | PT | C | 14 | P1 | PT | 092 | 01 | BILL 10 | B10 | S2 | 1F | R00 | ACF06 | 092 |  |  |  |  |  |  |  |  |  | GP |  |  |  |  |  | PMS | 313 | 944 |  |  |
| T14P109203C0 |  | PT-14 ; Partitions 1st face (PAT RM-1) | 45d | 2011-09-05 A | 2012-02-09 | T14P109201C0 | 10% | 40.5d | 2011-12-06 | 2012-01-29 | 72.28d | 47.49d | PARTITIONS [493 m]; PARTITIONS [2772 h]; Cost |  |  | T14P109203C0 | PT | C | 14 | P1 | PT | 092 | 03 | BILL 10 | B10 | S2 | 2F | R00 | ACF06 | 092 |  |  |  |  |  |  |  |  |  | GP |  |  |  |  |  | P1F | 314 | 945 |  |  |
| T14P126001C0 |  | PT-14 ; 1st Fix, Inst of Trunking/Conduiting (PAT RM-1) | 48d | 2011-12-01 | 2012-01-29 | T14CO07807C0, T14P123001C0 |  |  |  |  | 24.79d | 0d | ELECTRICAL [734.4 h]; Cost |  |  | T14P126001C0 | PT | C | 14 | P1 | ME | 260 | 01 | BILL 10 | B10 | S2 | 1F | R00 | ACF04 | 260 |  |  |  |  |  |  |  |  | 2219.22 | MEP |  |  |  | 25 | 1S | M1F |  |  |  |  |
| T14P109702C0 |  | PT-14 ; Installation of Bathroom Pods (PAT RM-1) | 0d | 2011-12-11 | 2011-12-11 | T13P109702C0, T13P209702C0, T14CO07807C0, AAFCI09201R02 FS+118d |  |  |  |  | 156.5d | 0d | Cost |  |  | T10P109701C0 | PT | C | 14 | P1 | BP | 097 | 01 | BILL 10 | B10 | S2 | FG | R00 | ACF06 | 097 |  |  |  |  |  |  |  |  |  |  |  |  |  |  |  |  | 105 | 1002 |  |  |
| T14P127010C0 |  | PT-14 ; 1st Fix, Inst of Trunking for ELV system (PAT RM-1) | 48d | 2011-12-13 | 2012-02-09 | T14CO07807C0, T14P123001C0, T14P126001C0 SS+9d |  |  |  |  | 24.79d | 0d | ELECTRICAL [1512 h]; Cost |  |  | T14P127010C0 | PT | C | 14 | P1 | ME | 270 | 10 | BILL 10 | B10 | S2 | 1F | R00 | ACF04 | 270 |  |  |  |  |  |  |  |  |  | MEP |  |  |  |  | 1S | M1F |  |  |  |  |
| T14P105503C0 |  | PT-14 ; Ceiling Support for medical equipment (PAT RM-1) | 24d | 2011-12-21 | 2012-01-19 | T14P109201C0, TAFCI22011R20 FS+72d |  |  |  |  | 87.15d | 48.99d | SECONDARY STEEL [62 h]; STRUCTURAL STEEL [28 T(Fe)]; Cost |  |  | D03EY05503C0 | PT | C | 14 | P1 | SW | 055 | 03 | BILL 10 | B10 | S2 | 03 | R00 | ACF03 | b |  |  |  |  |  |  |  |  |  |  |  |  |  |  |  |  | 335 | 962 |  |  |
| T14P122011C0 |  | PT-14 ; 2nd Fix, Drainage/Water pipe (wall) (PAT RM-1) | 42d | 2011-12-21 | 2012-02-11 | T14P109201C0 |  |  |  |  | 64.78d | 39.99d | PLUMBING [1378.8 h]; Cost |  |  | T14P122011C0 | PT | C | 14 | P1 | ME | 220 | 11 | BILL 10 | B10 | S2 | 2F | R00 | ACF07 | 220 |  |  |  |  |  |  |  |  |  | MEP |  |  |  |  | 2n |  |  |  |  |  |
| T14P126009C0 |  | PT-14 ; 2nd Fix, Inst of Wall conduites (PAT RM-1) | 42d | 2011-12-21 | 2012-02-11 | T14P109201C0 |  |  |  |  | 64.78d | 39.99d | ELECTRICAL [734.4 h]; Cost |  |  | T14P126009C0 | PT | C | 14 | P1 | ME | 260 | 09 | BILL 10 | B10 | S2 | 2F | R00 | ACF07 | 260 |  |  |  |  |  |  |  |  | 4438.43 | MEP |  |  |  | 20 | 2n |  |  |  |  |  |
| T14P126013C0 |  | PT-14 ; 1st Fix, Inst of Cable Tray (PAT RM-1) | 48d | 2011-12-25 | 2012-02-21 | T14CO07807C0, T14P123001C0, T14P127010C0 SS+10d |  |  |  |  | 24.79d | 0d | ELECTRICAL [399.6 h]; Cost |  |  | T14P126013C0 | PT | C | 14 | P1 | ME | 260 | 13 | BILL 10 | B10 | S2 | 1F | R00 | ACF04 | 260 |  |  |  |  |  |  |  |  |  | MEP |  |  |  |  | 1S | M1F |  |  |  |  |
| T14P122019C0 |  | PT-14 ; 1st Fix, Inst of Drainage pipe (ceiling) (PAT RM-1) | 48d | 2012-01-05 | 2012-03-03 | T14P123001C0, T14P126013C0 SS+9d |  |  |  |  | 24.79d | 0d | PLUMBING [1378.8 h]; Cost |  |  | T14P122019C0 | PT | C | 14 | P1 | ME | 220 | 19 | BILL 10 | B10 | S2 | 1F | R00 | ACF04 | 220 |  |  |  |  |  |  |  |  |  | MEP |  |  |  |  | 1S | M1F |  |  |  |  |
| T14P108103C0 |  | PT-14 ; Door Frames (PAT RM-1) | 36d | 2012-01-12 | 2012-02-23 | T14P109201C0, GNHE08101C0 FS+126d, T13PA08103C0 SS+3d |  |  |  |  | 67.38d | 0d | ASSORTED DOORS [303 h]; Cost |  |  | T14P108103C0 | PT | C | 14 | P1 | DO | 081 | 03 | BILL 10 | B10 | S2 | DF | R00 | ACF06 | 081 |  |  |  |  |  |  |  |  |  |  |  |  |  |  |  |  | 316 | 947 | 08 |  |
| T14P105511C0 |  | PT-14 ; Wall reinforcement for MEP/Medical (PAT RM-1) | 24d | 2012-01-14 | 2012-02-11 | T14P109201C0, TAFCI22011R02 FS+72d |  |  |  |  | 70.38d | 45.59d | SECONDARY STEEL [26 h]; Cost |  |  | T14P105511C0 | PT | C | 14 | P1 | SW | 055 | 11 | BILL 10 | B10 | S2 | 03 | R00 | ACF03 | b |  |  |  |  |  |  |  |  |  |  |  |  |  |  |  |  |  |  |  |  |
| T14P122005C0 |  | PT-14 ; 1st Fix, Inst of Water supply pipe (ceiling) (PAT RM-1) | 60d | 2012-01-17 | 2012-03-28 | T14P122019C0 SS+10d, T14P123001C0 |  |  |  |  | 24.79d | 0d | PLUMBING [4548 h]; Cost |  |  | T14P122005C0 | PT | C | 14 | P1 | ME | 220 | 05 | BILL 10 | B10 | S2 | 1F | R00 | ACF04 | 220 |  |  |  |  |  |  |  |  |  | MEP |  |  |  |  | 1S | M1F |  |  |  |  |
| T14P121111C0 |  | PT-14 ; 1st Fix, Inst of Sprinkler main pipe (PAT RM-1) | 48d | 2012-01-28 | 2012-03-25 | T14P122005C0 SS+9d, T14P123001C0 |  |  |  |  | 24.79d | 0d | MECHANICAL [853.2 h]; Cost |  |  | T14P121111C0 | PT | C | 14 | P1 | ME | 211 | 11 | BILL 10 | B10 | S2 | 1F | R00 | ACF04 | 211 |  |  |  |  |  |  |  |  |  | MEP |  |  |  |  | 1S | M1F |  |  |  |  |
| T14P123017C0 |  | PT-14 ; 1st Fix, Inst of CHW pipe (PAT RM-1) | 54d | 2012-02-05 | 2012-04-08 | T14P121111C0 SS+6d, T14P123001C0, T14P105503C0 FF+18d |  |  |  |  | 38.16d | 0d | MECHANICAL [2467.2 h]; Cost |  |  | T14P123017C0 | PT | C | 14 | P1 | ME | 230 | 17 | BILL 10 | B10 | S2 | 1F | R00 | ACF04 | 230 |  |  |  |  |  |  |  |  |  | MEP |  |  |  |  | 1S | M1F |  |  |  |  |
| T14P122007C0 |  | PT-14 ; 1st Fix, Inst of Medical Gas pipe (PAT RM-1) | 48d | 2012-02-08 | 2012-04-04 | T14P121111C0 SS+9d, T14P123001C0 |  |  |  |  | 24.79d | 0d | PLUMBING [1149.6 h]; Cost |  |  | T14P122007C0 | PT | C | 14 | P1 | ME | 220 | 07 | BILL 10 | B10 | S2 | 1F | R00 | ACF04 | 220 |  |  |  |  |  |  |  |  |  | MEP |  |  |  |  | 1S | M1F |  |  |  |  |
| T14P122015C0 |  | PT-14 ; 2nd Fix, Medical Gas pipe (PAT RM-1) | 42d | 2012-02-08 | 2012-03-28 | T14P109201C0, T14P122007C0 SS |  |  |  |  | 24.79d | 0d | PLUMBING [1149.6 h]; Cost |  |  | T14P122015C0 | PT | C | 14 | P1 | ME | 220 | 15 | BILL 10 | B10 | S2 | 2F | R00 | ACF07 | 220 |  |  |  |  |  |  |  |  |  | MEP |  |  |  |  | 2n |  |  |  |  |  |
| T14P123023C0 |  | PT-14 ; 1st Fix, Inst of Main Ducting (PAT RM-1) | 60d | 2012-02-12 | 2012-04-22 | T14P123001C0, T14P123017C0 SS+6d |  |  |  |  | 38.16d | 0d | MECHANICAL [8022 h]; Cost |  |  | T14P123023C0 | PT | C | 14 | P1 | ME | 230 | 23 | BILL 10 | B10 | S2 | 1F | R00 | ACF04 | 230 |  |  |  |  |  |  |  |  |  | MEP |  |  |  |  | 1S | M1F |  |  |  |  |
| T14P127001C0 |  | PT-14 ; 1st Fix, Wiring/ Cabling work (PAT RM-1) | 48d | 2012-02-21 | 2012-04-17 | T14P126001C0, T14P126013C0, T14P127010C0 |  |  |  |  | 90.16d | 54.88d | ELECTRICAL [392.4 h]; Cost |  |  | T14P127001C0 | PT | C | 14 | P1 | ME | 270 | 01 | BILL 10 | B10 | S2 | 1F | R00 | ACF04 | 270 |  |  |  |  |  |  |  |  |  | MEP |  |  |  |  | 1S | M1F |  |  |  |  |
| T14P121117C0 |  | PT-14 ; 1st Fix, Inst of Sprinkler branch pipe (PAT RM-1) | 48d | 2012-03-25 | 2012-05-20 | T14P109201C0, T14P121111C0, T14P105503C0 FF+18d |  |  |  |  | 62.16d | 26.88d | MECHANICAL [561.6 h]; Cost |  |  | T14P121117C0 | PT | C | 14 | P1 | ME | 211 | 17 | BILL 10 | B10 | S2 | 1F | R00 | ACF04 | 211 |  |  |  |  |  |  |  |  |  | MEP |  |  |  |  | 1S | M1F |  |  |  |  |
| T14P101005C0 |  | PT-14 ; 2nd, Wall Inspection by Consultant (PAT RM-1) | 6d | 2012-03-28 | 2012-04-04 | T14P122011C0, T14P122015C0, T14P126009C0 |  |  |  |  | 24.79d | 0d | Labor General [0.6 h]; Cost |  |  | T14P101005C0 | PT | C | 14 | P1 | ME | 010 | 05 | BILL 10 | B10 | S2 | WI | R00 | ACF07 | 010 |  |  |  |  |  |  |  |  |  | MEP |  |  |  |  | 2n |  |  |  |  |  |
| T14P109205C0 |  | PT-14 ; Partitions Closing (PAT RM-1) | 35.88d | 2012-04-04 | 2012-05-16 | T14P101005C0, T14P105511C0, T14P109203C0, T14P122005C0, T14P122019C0, TAFOA09214C1 FF, T14P109702C0 FF, T14P108103C0 FF |  |  |  |  | 24.79d | 0d | PARTITIONS [493 m]; PARTITIONS [3563 h]; Cost |  |  | T14P109205C0 | PT | C | 14 | P1 | PT | 092 | 05 | BILL 10 | B10 | S2 | FF | R00 | ACF06 | 092 |  |  |  |  |  |  |  |  |  | GP |  |  |  |  |  | P2F | 315 | 946 |  |  |
| T14P123009C0 |  | PT-14 ; 2nd Fix, Inst of VAV'S CHW connection (PAT RM-1) | 42d | 2012-04-08 | 2012-05-27 | T14P123017C0 |  |  |  |  | 56.16d | 20.88d | MECHANICAL [1450.8 h]; Cost |  |  | T14P123009C0 | PT | C | 14 | P1 | ME | 230 | 09 | BILL 10 | B10 | S2 | 2F | R00 | ACF07 | 230 |  |  |  |  |  |  |  |  |  | MEP |  |  |  |  | 2n |  |  |  |  |  |
| T14P123008C0 |  | PT-14 ; 1st Fix, Inst of VCD's/FD's (PAT RM-1) | 48d | 2012-04-22 | 2012-06-18 | T14P123023C0, T14P105503C0 FF+18d |  |  |  |  | 38.16d | 2.88d | MECHANICAL [1753.2 h]; Cost |  |  | T14P123008C0 | PT | C | 14 | P1 | ME | 230 | 08 | BILL 10 | B10 | S2 | 1F | R00 | ACF04 | 230 |  |  |  |  |  |  |  |  |  | MEP |  |  |  |  | 1S | M1F |  |  |  |  |
| T14P123015C0 |  | PT-14 ; 2nd Fix, Insulation of CHW pipe & Duct (PAT RM-1) | 48d | 2012-04-22 | 2012-06-18 | T14P123017C0, T14P123023C0 |  |  |  |  | 38.16d | 2.88d | MECHANICAL [3064.8 h]; Cost |  |  | T14P123015C0 | PT | C | 14 | P1 | ME | 230 | 15 | BILL 10 | B10 | S2 | 2F | R00 | ACF07 | 230 |  |  |  |  |  |  |  |  |  | MEP |  |  |  |  | 2n |  |  |  |  |  |
| T14P107103C0 |  | PT-14 ; Waterproofing (PAT RM-1) | 11.88d | 2012-05-16 | 2012-05-30 | T14P108103C0, T14P109205C0 |  |  |  |  | 113.66d | 38.12d | THERMAL & MOISTURE [504 h]; THERMAL & MOISTURE [3326 m2]; Cost |  |  | T14P107103C0 | PT | C | 14 | P1 | FF | 071 | 03 | BILL 10 | B10 | S2 | 01 | R00 | ACF03 | 071 |  |  |  |  |  |  |  |  |  |  |  |  |  |  |  |  | 105 | 999 |  |  |
| T14P109901C0 |  | PT-14 ; Wall Prime & 1st coat (PAT RM-1) | 30d | 2012-05-16 | 2012-06-21 | T14P109205C0 |  |  |  |  | 24.79d | 0d | WALL PAINT [587 h]; WALL PAINT [731 m2]; Cost |  |  | T14P109901C0 | PT | C | 14 | P1 | PA | 099 | 01 | BILL 10 | B10 | S2 | 01 | R00 | ACF06 | 099 |  |  |  |  |  |  |  |  |  |  |  |  |  |  |  |  | 328 | 956 |  |  |
| T14P126005C0 |  | PT-14 ; 2nd Fix, Wiring for Power/Lighting/Emergency (PAT RM-1) | 42d | 2012-05-16 | 2012-07-05 | T14P109205C0 |  |  |  |  | 80.04d | 0d | ELECTRICAL [392.4 h]; Cost |  |  | T14P126005C0 | PT | C | 14 | P1 | ME | 260 | 05 | BILL 10 | B10 | S2 | 2F | R00 | ACF07 | 260 |  |  |  |  |  |  |  |  |  | MEP |  |  |  |  | 2n |  |  |  |  |  |
| T14P126007C0 |  | PT-14 ; 2nd Fix, Cable Pulling (PAT RM-1) | 48d | 2012-05-16 | 2012-07-12 | T14P109201C0 SS+6d, T14P109205C0 |  |  |  |  | 115.29d | 90.5d | ELECTRICAL [2683.2 h]; Cost |  |  | T14P126007C0 | PT | C | 14 | P1 | ME | 260 | 07 | BILL 10 | B10 | S2 | 2F | R00 | ACF07 | 260 |  |  |  |  |  |  |  |  |  | MEP |  |  |  |  | 2n |  |  |  |  |  |
| T14P126011C0 |  | PT-14 ; 2nd Fix, Inst of Equipment (DB) (PAT RM-1) | 54d | 2012-05-16 | 2012-07-19 | T14P109205C0 |  |  |  |  | 101.54d | 38d | ELECTRICAL [878.4 h]; Cost |  |  | T14P126011C0 | PT | C | 14 | P1 | ME | 260 | 11 | BILL 10 | B10 | S2 | 2F | R00 | ACF04 | 260 |  |  |  |  |  |  |  |  |  | MEP |  |  |  |  | 2n |  |  |  |  | E |
| T14P126053C0 |  | PT-14 ; 2nd Fix, Wiring / Cabling (PAT RM-1) | 42d | 2012-05-16 | 2012-07-05 | T14P109203C0, T14P109205C0 |  |  |  |  | 43.29d | 8d | ELECTRICAL [392.4 h]; Cost |  |  | T14P126053C0 | PT | C | 14 | P1 | ME | 260 | 53 | BILL 10 | B10 | S2 | 2F | R00 | ACF07 | 260 |  |  |  |  |  |  |  |  |  | MEP |  |  |  |  | 2n |  | 389 | 977 |  |  |
| T14P105501C0 |  | PT-14 ; Handrails & balustrade (PAT RM-1) | 30.5d | 2012-06-21 | 2012-07-26 | T14P109901C0 |  |  |  |  | 24.79d | 0d | SECONDARY STEEL [230 h]; Cost |  |  | T14P105501C0 | PT | C | 14 | P1 | SW | 055 | 01 | BILL 10 | B10 | S2 | 01 | R00 | ACF03 | a |  |  |  |  |  |  |  |  |  |  |  |  |  |  |  |  |  |  |  |  |
| T14P109501C0 |  | PT-14 ; Ceiling Grid and Service Tile (PAT RM-1) | 20d | 2012-06-21 | 2012-07-15 | T14P105503C0, T14P109205C0 SS+15d, T14P121117C0, T14P123008C0, T14P123009C0, T14P123015C0, T14P127001C0, T14P126053C0 FF, T14P109901C0 |  |  |  |  | 35.29d | 0d | CEILING GRID FOR GYPSUM [4870 h]; CEILING GRID FOR GYPSUM [416.8 m2]; Cost |  |  | T14P109501C0 | PT | C | 14 | P1 | CE | 095 | 01 | BILL 10 | B10 | S2 | 01 | R00 | ACF06 | 095 |  |  |  |  |  |  |  |  |  |  |  |  |  |  |  |  | 323 | 952 |  |  |
| T14P109510C0 |  | PT-14 ; Patient Lift Ceiling Rail (by others) (PAT RM-1) | 30d | 2012-06-21 | 2012-07-26 | T14P109501C0 SS |  |  |  |  | 103.29d | 78.5d | Labor General [0.1 h]; Cost |  |  | I06P109501C0 | PT | C | 14 | P1 | CE | 095 | 10 | BILL 10 | B10 | S2 | 02 | R00 | ACF06 | 095 |  |  |  |  |  |  |  |  |  |  |  |  |  |  |  |  | 323 | 952 |  |  |
| T14P126015C0 |  | PT-14 ; Final Fix, Termination & Gladding of Cables (PAT RM-1) | 36d | 2012-07-05 | 2012-08-16 | T14P126005C0 |  |  |  |  | 80.04d | 26d | ELECTRICAL [148.8 h]; Cost |  |  | T14P126015C0 | PT | C | 14 | P1 | ME | 260 | 15 | BILL 10 | B10 | S2 | FF | R00 | ACF07 | 260 |  |  |  |  |  |  |  |  |  | MEP |  |  |  |  | FF |  |  |  |  |  |
| T14P109305C0 |  | PT-14 ; Flooring (Terrazzo) (PAT RM-1) | 30d | 2012-07-15 | 2012-08-21 | T14P107103C0, T14P109501C0 |  |  |  |  | 75.54d | 0d | TERRAZO FLOOR [1427 m2]; TERRAZO FLOOR [2568 h]; Cost |  |  | T14P109305C0 | PT | C | 14 | P1 | FF | 096 | 05 | BILL 10 | B10 | S2 | 07 | R00 | ACF06 | TZ |  |  |  |  |  |  |  |  |  |  |  |  |  |  |  |  | 106 | 1000 |  |  |
| T14P109905C0 |  | PT-14 ; Ceiling Prime & 1st coat (PAT RM-1) | 30d | 2012-07-15 | 2012-08-21 | T14P109501C0 |  |  |  |  | 105.54d | 0d | CEILING PAINT [36 h]; CEILING PAINT [43 m2]; Cost |  |  | T14P109905C0 | PT | C | 14 | P1 | PA | 099 | 05 | BILL 10 | B10 | S2 | 01 | R00 | ACF06 | 099 |  |  |  |  |  |  |  |  |  |  |  |  |  |  |  |  | 330 | 958 |  |  |
| T14P121115C0 |  | PT-14 ; 2nd Fix, Inst of Sprinkler droppers (PAT RM-1) | 42d | 2012-07-15 | 2012-09-04 | T14P109501C0 |  |  |  |  | 66.04d | 0d | MECHANICAL [1602 h]; Cost |  |  | T14P121115C0 | PT | C | 14 | P1 | ME | 211 | 15 | BILL 10 | B10 | S2 | 2F | R00 | ACF07 | 211 |  |  |  |  |  |  |  |  |  | MEP |  |  |  |  | 2n |  |  |  |  |  |
| T14P123021C0 |  | PT-14 ; 2nd Fix, Inst of Flexible Duct & Plenum boxes (PAT RM-1) | 42d | 2012-07-15 | 2012-09-04 | T14P109205C0, T14P109501C0 |  |  |  |  | 66.04d | 0d | MECHANICAL [30 h]; Cost |  |  | T14P123021C0 | PT | C | 14 | P1 | ME | 230 | 21 | BILL 10 | B10 | S2 | 2F | R00 | ACF07 | 230 |  |  |  |  |  |  |  |  |  | MEP |  |  |  |  | 2n |  |  |  |  |  |
| T14P126017C0 |  | PT-14 ; Final Fix, Inst of Ceiling rose (PAT RM-1) | 36d | 2012-07-15 | 2012-08-28 | T14P109501C0 |  |  |  |  | 54.04d | 0d | ELECTRICAL [61.2 h]; Cost |  |  | T14P126017C0 | PT | C | 14 | P1 | ME | 260 | 17 | BILL 10 | B10 | S2 | FF | R00 | ACF07 | 260 |  |  |  |  |  |  |  |  |  | MEP |  |  |  |  | FF |  |  |  |  |  |
| T14P127002C0 |  | PT-14 ; 2nd Fix, Wiring Droppers (PAT RM-1) | 42d | 2012-07-15 | 2012-09-04 | T14P109501C0 |  |  |  |  | 60.04d | 0d | ELECTRICAL [392.4 h]; Cost |  |  | T14P127002C0 | PT | C | 14 | P1 | ME | 270 | 02 | BILL 10 | B10 | S2 | 2F | R00 | ACF07 | 270 |  |  |  |  |  |  |  |  |  | MEP |  |  |  |  | 2n |  |  |  |  |  |
| T14P127020C0 |  | PT-14 ; 2nd Fix, Inst of ELV Equipment (Panels) (PAT RM-1) | 42d | 2012-07-15 | 2012-09-04 | T14P109205C0, T14P109501C0 |  |  |  |  | 63.54d | 0d | ELECTRICAL [1819.2 h]; Cost |  |  | T14P127020C0 | PT | C | 14 | P1 | ME | 270 | 20 | BILL 10 | B10 | S2 | 2F | R00 | ACF04 | 270 |  |  |  |  |  |  |  |  |  | MEP |  |  |  |  | 2n |  |  |  |  | E |
| T14P140303C0 |  | PT-14 ; Final Fix, Pneumatic Station (PAT RM-1) | 36d | 2012-07-15 | 2012-08-28 | T14P109501C0 |  |  |  |  | 117.54d | 92.75d | MECHANICAL [2974.8 h]; Cost |  |  | T14P140303C0 | PT | C | 14 | P1 | ME | 403 | 03 | BILL 10 | B10 | S2 | FF | R00 | ACF07 | 403 |  |  |  |  |  |  |  |  |  | MEP |  |  |  |  | FF |  |  |  |  |  |
| T14P121113C0 |  | PT-14 ; Final Fix, Inst of Sprinklers head/ Extinguisher (PAT RM-1) | 36d | 2012-07-22 | 2012-09-04 | T14P109501C0, T14P121115C0 SS+6d |  |  |  |  | 66.04d | 12d | MECHANICAL [234 h]; Cost |  |  | T14P121113C0 | PT | C | 14 | P1 | ME | 211 | 13 | BILL 10 | B10 | S2 | FF | R00 | ACF07 | 211 |  |  |  |  |  |  |  |  |  | MEP |  |  |  |  | FF |  |  |  |  |  |
| T14P123019C0 |  | PT-14 ; Final Fix, Inst of Grilles & Diffusers (PAT RM-1) | 36d | 2012-07-22 | 2012-09-04 | T14P109501C0, T14P123021C0 SS+6d |  |  |  |  | 66.04d | 12d | MECHANICAL [1498.8 h]; Cost |  |  | T14P123019C0 | PT | C | 14 | P1 | ME | 230 | 19 | BILL 10 | B10 | S2 | FF | R00 | ACF07 | 230 |  |  |  |  |  |  |  |  |  | MEP |  |  |  |  | FF |  |  |  |  |  |
| T14P126003C0 |  | PT-14 ; Final Fix, Inst of Light fittings (PAT RM-1) | 48d | 2012-07-22 | 2012-09-18 | T14P109501C0, T14P126017C0 SS+6d |  |  |  |  | 54.04d | 0d | ELECTRICAL [7815.6 h]; Cost |  |  | T14P126003C0 | PT | C | 14 | P1 | ME | 260 | 03 | BILL 10 | B10 | S2 | FF | R00 | ACF07 | 260 |  |  |  |  |  |  |  |  |  | MEP |  |  |  |  | FF |  |  |  |  |  |
| T14P127030C0 |  | PT-14 ; Final Fix, Inst of ELV device (Detector/Speaker) (PAT RM-1) | 42d | 2012-07-22 | 2012-09-11 | T14P109501C0, T14P127002C0 SS+6d |  |  |  |  | 60.04d | 6d | ELECTRICAL [3571.2 h]; Cost |  |  | T14P127030C0 | PT | C | 14 | P1 | ME | 270 | 30 | BILL 10 | B10 | S2 | FF | R00 | ACF07 | 270 |  |  |  |  |  |  |  |  |  | MEP |  |  |  |  | FF |  |  |  |  |  |
| T14P109601C0 |  | PT-14 ; Flooring (Rubber & etc) (PAT RM-1) | 30d | 2012-07-26 | 2012-09-02 | T14P109501C0, T14P105501C0 |  |  |  |  | 24.79d | 0d | RUBBER FLOOR [32 h]; RUBBER FLOOR [77 m2]; Cost |  |  | T14P109601C0 | PT | C | 14 | P1 | FF | 096 | 01 | BILL 10 | B10 | S2 | 03 | R00 | ACF06 | RF |  |  |  |  |  |  |  |  |  |  |  |  |  |  |  |  | 326 | 955 |  |  |
| T14P109903C0 |  | PT-14 ; Wall Final Paint (PAT RM-1) | 30d | 2012-08-21 | 2012-09-25 | T14P109901C0, T14P109905C0, T14P109501C0 |  |  |  |  | 105.54d | 48d | WALL PAINT [316 h]; WALL PAINT [394 m2]; Cost |  |  | T14P109903C0 | PT | C | 14 | P1 | PA | 099 | 03 | BILL 10 | B10 | S2 | 02 | R00 | ACF06 | 099 |  |  |  |  |  |  |  |  |  |  |  |  |  |  |  |  | 329 | 957 |  |  |
| T14P122025C0 |  | PT-14 ; Final Fix, Inst of Sanitary Ware (PAT RM-1) | 42d | 2012-08-21 | 2012-10-09 | T14P109205C0, T14P109305C0 |  |  |  |  | 75.54d | 0d | PLUMBING [3690 h]; Cost |  |  | T14P122025C0 | PT | C | 14 | P1 | ME | 220 | 25 | BILL 10 | B10 | S2 | FF | R00 | ACF07 | 220 |  |  |  |  |  |  |  |  |  | MEP |  |  |  |  | FF |  |  |  |  |  |
| T14P122021C0 |  | PT-14 ; Final Fix, Terminate Sanitary Ware & Appliances (PAT RM-1) | 42d | 2012-08-28 | 2012-10-16 | T14P122011C0, T14P122025C0 SS+6d |  |  |  |  | 75.54d | 50.75d | PLUMBING [3361.2 h]; Cost |  |  | T14P122021C0 | PT | C | 14 | P1 | ME | 220 | 21 | BILL 10 | B10 | S2 | FF | R00 | ACF07 | 220 |  |  |  |  |  |  |  |  |  | MEP |  |  |  |  | FF |  |  |  |  |  |

| ID | WBS | Activity | Duration | Start | Finish | Predecessors | Complete | Remaining | Planned start | Planned finish | Total float | Free float | Resources | Cost | Actual cost | Change Order # | NEW ACTIVITY ID | change id | CCAD BUILDING(SET) | CCAD PHASE(SET) | CCAD FLOOR(SET) | CCAD ZONE(SET) | CCAD WORK(SET) | CCAD SECTION(SET) | CCAD SERIAL No.(SET) | CCAD CBS(SET) | CCAD BILL(SET) | CCAD HANDOVER(SET) | CCAD TAG(SET) | CCAD REV(SET) | CCADACF (SET) | CCAD SSCF | CCAD DIVISION(SET) | CCAD SUB ZONE MEP(SET) | CCAD CSA | user_number8 | user_integer1 | user_integer2 | user_number7 | P_811 | P_711 | U% | Act Selector % | CCAD MEQ |
| --- | --- | --- | --- | --- | --- | --- | --- | --- | --- | --- | --- | --- | --- | --- | --- | --- | --- | --- | --- | --- | --- | --- | --- | --- | --- | --- | --- | --- | --- | --- | --- | --- | --- | --- | --- | --- | --- | --- | --- | --- | --- | --- | --- | --- |
| T14P106101C0 |  | PT-14 ; Wood / caseworks (PAT RM-1) | 48d | 2012-09-02 | 2012-10-30 | T13P106101C0 SS+5d, T14CO04407C0, T14P109501C0, T14P109601C0, T14P109901C0, TAFWA00101M0 |  |  |  |  | 24.79d | 0d | WOOD WORK/CASEWORK [873.9 no]; WOOD WORK/CASEWORK [1915 h]; Cost |  |  | 332 | 960 | T14P106101C0 | PT | C | 14 | P1 | WO | 061 | 01 | BILL 10 | B10 | S2 | WW | R00 | ACF06 | 061 |  |  |  |  |  |  |  |  |  |  |  |  |
| T14P106102C0 |  | PT-14 ; Head/Foot Wall (PAT RM-1) | 54d | 2012-09-02 | 2012-11-06 | T14CO04407C0, T14P109501C0, TAFWA00101M0, T14P106101C0 SS |  |  |  |  | 41.04d | 0d | WOOD WORK/CASEWORK [1649 h]; Cost |  |  | 332 | 960 | T14P106102C0 | PT | C | 14 | P1 | WO | 061 | 02 | BILL 10 | B10 | S2 | WW | R00 | ACF06 | 061 |  |  |  |  |  |  |  |  |  |  |  |  |
| T14P108107C0 |  | PT-14 ; Doors (PAT RM-1) | 36d | 2012-09-02 | 2012-10-14 | T14P108103C0, T14P109501C0, T14P109601C0, T14P109901C0 |  |  |  |  | 58.41d | 0d | ASSORTED DOORS [610 h]; ASSORTED DOORS [61 no]; Cost |  |  | 317 | 948 | T14P108107C0 | PT | C | 14 | P1 | DO | 081 | 07 | BILL 10 | B10 | S2 | DR | R00 | ACF06 | 081 | 08 |  |  |  |  |  |  |  |  |  |  |  |
| T14P109701C0 |  | PT-14 ; Wall finishes (ST, WD, WC) (PAT RM-1) | 36d | 2012-09-04 | 2012-10-16 | T14P126011C0, T14P127020C0, T14P109501C0, T14P109601C0, T14P109305C0 |  |  |  |  | 63.54d | 0d | ASSORTED WALL FINISH [519 h]; ASSORTED WALL FINISH [595 m2]; Cost |  |  | 105 | 1002 | T14P109701C0 | PT | C | 14 | P1 | WF | 097 | 01 | BILL 10 | B10 | S2 | 01 | R00 | ACF06 | 097 |  |  |  |  |  |  |  |  |  |  |  |  |
| T14P101006C0 |  | PT-14 ; 2nd, Ceiling Inspection by Consultants (PAT RM-1) | 5.25d | 2012-09-18 | 2012-09-24 | T14P121115C0, T14P123009C0, T14P123015C0, T14P127002C0, T14P109501C0, T14P121113C0, T14P123019C0, T14P126015C0, T14P126017C0, T14P126003C0, T14P127030C0 |  |  |  |  | 54.04d | 29.25d | Labor General [0.6 h]; Cost |  |  |  |  | T14P101006C0 | PT | C | 14 | P1 | ME | 010 | 06 | BILL 10 | B10 | S2 | CI | R00 | ACF07 | 010 |  | 2n | MEP |  |  |  |  |  |  |  |  |  |
| T14P108709C0 |  | PT-14 ; Ironmongery (PAT RM-1) | 30.62d | 2012-10-14 | 2012-11-22 | T14P108107C0 |  |  |  |  | 58.41d | 33.62d | IRONMONGERY [870 h]; IRONMONGERY [87 no]; Cost |  |  | 322 | 951 | T14P108709C0 | PT | C | 14 | P1 | DO | 087 | 09 | BILL 10 | B10 | S2 | IM | R00 | ACF06 | 087 | 08 |  |  |  |  |  |  |  |  |  |  |  |
| T14P111001C0 |  | PT-14 ; Wall Protection (WP, CG, WG, FCG) (PAT RM-1) | 24d | 2012-10-16 | 2012-11-17 | T14P109701C0, T14P109903C0 SS |  |  |  |  | 63.54d | 38.75d | FF&E [27 h]; Cost |  |  | 326 | 1001 | T14P111001C0 | PT | C | 14 | P1 | WF | 110 | 01 | BILL 10 | B10 | S2 | 03 | R00 | ACF08 | b |  |  |  |  |  |  |  |  |  |  |  |  |
| T14P109503C0 |  | PT-14 ; Ceiling closure - ACT/Gypsum (PAT RM-1) | 22.25d | 2012-10-30 | 2012-11-27 | T14P101006C0, T14P109510C0, T14P121115C0, T14P126005C0, T14P127001C0, T14P127002C0, TAFOA09513C1 FF, T14P106101C0, T14P123021C0, T14P126007C0 |  |  |  |  | 24.79d | 0d | ASSORTED CEILING FINISH [549.81 h]; CEILING GYPSUM [136.74 h]; ASSORTED CEILING FINISH [894 m2]; CEILING GYPSUM [417 m2]; Cost |  |  | 324 | 953 | T14P109503C0 | PT | C | 14 | P1 | CE | 095 | 03 | BILL 10 | B10 | S2 | 02 | R00 | ACF06 | 095 |  |  |  |  |  |  |  |  |  |  |  |  |
| T14P122029C0 |  | PT-14 ; Final Fix, Medical Gas pipe (PAT RM-1) | 18d | 2012-11-06 | 2012-11-28 | T14P109501C0, T14P106102C0 |  |  |  |  | 41.04d | 16.25d | PLUMBING [1149.6 h]; Cost |  |  |  |  | T14P122029C0 | PT | C | 14 | P1 | ME | 220 | 29 | BILL 10 | B10 | S2 | FF | R00 | ACF07 | 220 |  | FF | MEP |  |  |  |  |  |  |  |  |  |
| T14P109674C1 |  | PT-14, Carpet Tile Finish (Patient Room-1) | 0d | 2012-11-27 | 2012-11-27 | T14P109903C0 SS, T14P109907C0 SS |  |  |  |  | 54.79d | 30d | Cost |  |  |  |  |  | PT | C | 14 | P1 | FF | 096 |  |  | B10 |  |  | R00 | ACF06 | CPT |  |  | CPT |  |  |  |  |  |  |  |  |  |
| T14P109907C0 |  | PT-14 ; Ceiling Final paint (PAT RM-1) | 18d | 2012-11-27 | 2012-12-19 | T14P109601C0, T14P109905C0, T14P109503C0 |  |  |  |  | 36.79d | 0d | CEILING PAINT [20 h]; CEILING PAINT [23 m2]; Cost |  |  | 331 | 959 | T14P109907C0 | PT | C | 14 | P1 | PA | 099 | 07 | BILL 10 | B10 | S2 | 02 | R00 | ACF06 | 099 |  |  |  |  |  |  |  |  |  |  |  |  |
| T14P111003C0 |  | PT-14 ; FF & E (PAT RM-1) | 18d | 2012-11-27 | 2012-12-19 | T14P109601C0, T14P106101C0, T14P109503C0 |  |  |  |  | 36.79d | 12d | FF&E [1067 h]; Cost |  |  | 333 | 961 | T14P111003C0 | PT | C | 14 | P1 | WO | 110 | 03 | BILL 10 | B10 | S2 | 04 | R00 | ACF08 | a |  |  |  |  |  |  |  |  |  |  |  |  |
| T14P122027C0 |  | PT-14 ; Final Fix, Inst of All drain (PAT RM-1) | 18d | 2012-11-27 | 2012-12-19 | T14P109305C0, T14P109503C0 |  |  |  |  | 24.79d | 0d | PLUMBING [1378.8 h]; Cost |  |  |  |  | T14P122027C0 | PT | C | 14 | P1 | ME | 220 | 27 | BILL 10 | B10 | S2 | FF | R00 | ACF07 | 220 |  | FF | MEP |  |  |  |  |  |  |  |  |  |
| T14P126019C0 |  | PT-14 ; Final Fix, Inst of Switch/Sockets (PAT RM-1) | 18d | 2012-11-27 | 2012-12-19 | T14P109901C0, T14P109503C0 |  |  |  |  | 24.79d | 0d | ELECTRICAL [362.4 h]; Cost |  |  |  |  | T14P126019C0 | PT | C | 14 | P1 | ME | 260 | 19 | BILL 10 | B10 | S2 | FF | R00 | ACF07 | 260 |  | FF | MEP |  |  |  |  |  |  |  |  |  |
|  | 10 | **Precommissioning Tesing & snagging (PAT RM-1)** |  | 2012-12-19 | 2013-02-03 |  |  |  |  |  |  |  |  |  |  |  |  |  |  |  |  |  |  |  |  |  |  |  |  |  |  |  |  |  |  |  |  |  |  |  |  |  |  |  |
| T14TS01801C0 |  | PT-14 ; MEP de-snag, FIREM sign-off | 12d | 2012-12-19 | 2013-01-03 | T14P122025C0, T14P122027C0, T14P126015C0, T14P122021C0, T14P121113C0, T14P123019C0, T14P140303C0, T14P122029C0, T14P126017C0, T14P126003C0, T14P127030C0, T14P126019C0 |  |  |  |  | 24.79d | 0d | TESTING & COMMISSIONING [2040 h]; Cost |  |  |  |  | T14TS01801C0 | PT | C | 14 | TS | SC | 018 | 01 | BILL 10 | B10 | S2 | 01 | R00 | ACF07 | 018 |  |  |  |  |  |  |  |  |  |  |  |  |
| T14TS01806C0 |  | PT-14 ; Touch-up & Clean / JV inspection /CIR /De-snag | 18d | 2013-01-03 | 2013-01-26 | T14P106101C0, T14P106102C0, T14P108709C0, T14P109305C0, T14P109601C0, T14P109701C0, T14P109903C0, T14P109907C0, T14P111001C0, T14P111003C0, T14TS01801C0, T14P105501C0, T14P109503C0, T14P109674C1, T14P209684C1 |  |  |  |  | 24.79d | 0d | TESTING & COMMISSIONING [128 h]; Cost |  |  |  |  | T14TS01802C0 | PT | C | 14 | TS | SC | 018 | 02 | BILL 10 | B10 | S2 | 02 | R00 | ACF07 | 018 |  |  |  |  |  |  |  |  |  |  |  |  |
| T14TS01809C0 |  | PT-14 ; Consultant's final de-snag inspection | 7d | 2013-01-26 | 2013-02-03 | T14TS01806C0 |  |  |  |  | 24.79d | 15.79d | Labor General [0.5 h]; Cost |  |  |  |  | T14TS01803C0 | PT | C | 14 | TS | SC | 018 | 03 | BILL 10 | B10 | S2 | 03 | R00 | ACF07 | 018 |  |  |  |  |  |  |  |  |  |  |  |  |
|  | 03 | **PAT RM-2** |  | 2011-08-02 | 2013-01-26 |  |  |  |  |  |  |  |  |  |  |  |  |  |  |  |  |  |  |  |  |  |  |  |  |  |  |  |  |  |  |  |  |  |  |  |  |  |  |  |
| T14P223001C0 |  | PT-14 ; 1st Fix, Inst. of Supports for MEP (PAT RM-2) | 53.88d | 2011-08-02 A | 2011-11-02 | T14CO07807C0 | 50% | 26.94d | 2011-08-15 | 2011-10-18 | 39.46d | 0d | MECHANICAL [800.4 h]; Cost [45150.4 AED] | 45,150.38 | 22,575.19 |  |  | T14P223001C0 | PT | C | 14 | P2 | ME | 230 | 01 | BILL 10 | B10 | S2 | 1F | R00 | ACF04 | 230 |  | 1S | MEP | 0 | 0 | 0 | 0 | 10 | 0 | 20 | M1F |  |
| T14P209201C0 |  | PT-14 ; Metal Studs (PAT RM-2) | 42d | 2011-09-05 A | 2011-12-21 | T14P223001C0 SS, T14CO04407C0 FF, T14CO04405C0 FF, T14P223001C0 FF | 25% | 31.5d | 2011-11-20 | 2012-01-11 | 63.03d | 0d | PARTITIONS [2367 h]; PARTITIONS - Metal Studs [328 m]; Cost |  |  | 313 | 944 | T14P209201C0 | PT | C | 14 | P2 | PT | 092 | 01 | BILL 10 | B10 | S2 | 1F | R00 | ACF06 | 092 |  |  | GP |  |  |  |  |  |  | 25 | PMS |  |
| T14P209203C0 |  | PT-14 ; Partitions 1st face (PAT RM-2) | 45d | 2011-09-05 A | 2012-02-09 | T14P209201C0 | 10% | 40.5d | 2011-12-06 | 2012-01-29 | 70.53d | 23.94d | PARTITIONS [328 m]; PARTITIONS [1854 h]; Cost |  |  | 314 | 945 | T14P209203C0 | PT | C | 14 | P2 | PT | 092 | 03 | BILL 10 | B10 | S2 | 2F | R00 | ACF06 | 092 |  |  | GP |  |  |  |  |  |  |  | P1F |  |
| T14P226001C0 |  | PT-14 ; 1st Fix, Inst of Trunking/Conduiting (PAT RM-2) | 48d | 2011-11-02 | 2012-01-04 | T14CO07807C0, T14P223001C0 |  |  |  |  | 39.46d | 0d | ELECTRICAL [734.4 h]; Cost |  |  |  |  | T14P226001C0 | PT | C | 14 | P2 | ME | 260 | 01 | BILL 10 | B10 | S2 | 1F | R00 | ACF04 | 260 |  | 1S | MEP |  |  |  |  |  |  |  | M1F |  |
| T14P227010C0 |  | PT-14 ; 1st Fix, Inst of Trunking for ELV system (PAT RM-2) | 48d | 2011-11-16 | 2012-01-15 | T14CO07807C0, T14P223001C0, T14P226001C0 SS+9d |  |  |  |  | 39.46d | 0d | ELECTRICAL [1512 h]; Cost |  |  |  |  | T14P227010C0 | PT | C | 14 | P2 | ME | 270 | 10 | BILL 10 | B10 | S2 | 1F | R00 | ACF04 | 270 |  | 1S | MEP |  |  |  |  |  |  |  | M1F |  |
| T14P226013C0 |  | PT-14 ; 1st Fix, Inst of Cable Tray (PAT RM-2) | 48d | 2011-11-28 | 2012-01-25 | T14CO07807C0, T14P223001C0, T14P227010C0 SS+9d |  |  |  |  | 39.46d | 0d | ELECTRICAL [399.6 h]; Cost |  |  |  |  | T14P226013C0 | PT | C | 14 | P2 | ME | 260 | 13 | BILL 10 | B10 | S2 | 1F | R00 | ACF04 | 260 |  | 1S | MEP |  |  |  |  |  |  |  | M1F |  |
| T14P222019C0 |  | PT-14 ; 1st Fix, Inst of Drainage pipe (ceiling) (PAT RM-2) | 48d | 2011-12-10 | 2012-02-06 | T14P223001C0, T14P226013C0 SS+9d |  |  |  |  | 39.46d | 0d | PLUMBING [1378.8 h]; Cost |  |  |  |  | T14P222019C0 | PT | C | 14 | P2 | ME | 220 | 19 | BILL 10 | B10 | S2 | 1F | R00 | ACF04 | 220 |  | 1S | MEP |  |  |  |  |  |  |  | M1F |  |
| T14P209702C0 |  | PT-14 ; Installation of Bathroom Pods (PAT RM-2) | 0d | 2011-12-11 | 2011-12-11 | T14P109702C0 SS, T14CO07807C0, AAFCI09201R02 FS+118d |  |  |  |  | 156.5d | 0d | Cost |  |  | 105 | 1002 | T10P109701C0 | PT | C | 14 | P2 | BP | 097 | 01 | BILL 10 | B10 | S2 | FG | R00 | ACF06 | 097 |  |  |  |  |  |  |  |  |  |  |  |  |
| T14P222005C0 |  | PT-14 ; 1st Fix, Inst of Water supply pipe (ceiling) (PAT RM-2) | 60d | 2011-12-20 | 2012-03-01 | T14P222019C0 SS+9d, T14P223001C0 |  |  |  |  | 39.46d | 0d | PLUMBING [4548 h]; Cost |  |  |  |  | T14P222005C0 | PT | C | 14 | P2 | ME | 220 | 05 | BILL 10 | B10 | S2 | 1F | R00 | ACF04 | 220 |  | 1S | MEP |  |  |  |  |  |  |  | M1F |  |
| T14P205503C0 |  | PT-14 ; Ceiling Support for medical equipment (PAT RM-2) | 24d | 2011-12-21 | 2012-01-19 | T14P209201C0, TAFCI22011R20 FS+72d |  |  |  |  | 72.9d | 33.44d | SECONDARY STEEL [72 h]; STRUCTURAL STEEL [29 T(Fe)]; Cost |  |  | 335 | 962 | D03EY05503C0 | PT | C | 14 | P2 | SW | 055 | 03 | BILL 10 | B10 | S2 | 03 | R00 | ACF03 | b |  |  |  |  |  |  |  |  |  |  |  |  |
| T14P222011C0 |  | PT-14 ; 2nd Fix, Drainage/Water pipe (wall) (PAT RM-2) | 42d | 2011-12-21 | 2012-02-11 | T14P209201C0 |  |  |  |  | 63.03d | 16.44d | PLUMBING [1378.8 h]; Cost |  |  |  |  | T14P222011C0 | PT | C | 14 | P2 | ME | 220 | 11 | BILL 10 | B10 | S2 | 2F | R00 | ACF07 | 220 |  | 2n | MEP |  |  |  |  |  |  |  |  |  |
| T14P226009C0 |  | PT-14 ; 2nd Fix, Inst of Wall conduites (PAT RM-2) | 42d | 2011-12-21 | 2012-02-11 | T14P209201C0 |  |  |  |  | 63.03d | 16.44d | ELECTRICAL [734.4 h]; Cost |  |  |  |  | T14P226009C0 | PT | C | 14 | P2 | ME | 260 | 09 | BILL 10 | B10 | S2 | 2F | R00 | ACF07 | 260 |  | 2n | MEP |  |  |  |  |  |  |  |  |  |
| T14P221111C0 |  | PT-14 ; 1st Fix, Inst of Sprinkler main pipe (PAT RM-2) | 48d | 2011-12-31 | 2012-02-27 | T14P222005C0 SS+9d, T14P223001C0 |  |  |  |  | 39.46d | 0d | MECHANICAL [853.2 h]; Cost |  |  |  |  | T14P221111C0 | PT | C | 14 | P2 | ME | 211 | 11 | BILL 10 | B10 | S2 | 1F | R00 | ACF04 | 211 |  | 1S | MEP |  |  |  |  |  |  |  | M1F |  |
| T14P222007C0 |  | PT-14 ; 1st Fix, Inst of Medical Gas pipe (PAT RM-2) | 48d | 2012-01-11 | 2012-03-08 | T14P221111C0 SS+9d, T14P223001C0 |  |  |  |  | 46.59d | 0d | PLUMBING [1149.6 h]; Cost |  |  |  |  | T14P222007C0 | PT | C | 14 | P2 | ME | 220 | 07 | BILL 10 | B10 | S2 | 1F | R00 | ACF04 | 220 |  | 1S | MEP |  |  |  |  |  |  |  | M1F |  |
| T14P222015C0 |  | PT-14 ; 2nd Fix, Medical Gas pipe (PAT RM-2) | 42d | 2012-01-11 | 2012-03-01 | T14P209201C0, T14P222007C0 SS |  |  |  |  | 46.59d | 0d | PLUMBING [1149.6 h]; Cost |  |  |  |  | T14P222015C0 | PT | C | 14 | P2 | ME | 220 | 15 | BILL 10 | B10 | S2 | 2F | R00 | ACF07 | 220 |  | 2n | MEP |  |  |  |  |  |  |  |  |  |
| T14P205511C0 |  | PT-14 ; Wall reinforcement for MEP/Medical (PAT RM-2) | 24d | 2012-01-14 | 2012-02-11 | T14P209201C0, TAFCI22011R02 FS+72d |  |  |  |  | 68.63d | 22.04d | SECONDARY STEEL [31 h]; Cost |  |  |  |  | T14P205511C0 | PT | C | 14 | P2 | SW | 055 | 11 | BILL 10 | B10 | S2 | 03 | R00 | ACF03 | b |  |  |  |  |  |  |  |  |  |  |  |  |
| T14P208103C0 |  | PT-14 ; Door Frames (PAT RM-2) | 36d | 2012-01-16 | 2012-02-27 | T14P209201C0, GNHE08101C0 FS+126d, T14P108103C0 SS+3d |  |  |  |  | 67.38d | 0d | ASSORTED DOORS [215 h]; Cost |  |  | 316 | 947 | T14P208103C0 | PT | C | 14 | P2 | DO | 081 | 03 | BILL 10 | B10 | S2 | DF | R00 | ACF06 | 081 | 08 |  |  |  |  |  |  |  |  |  |  |  |
| T14P223017C0 |  | PT-14 ; 1st Fix, Inst of CHW pipe (PAT RM-2) | 54d | 2012-01-17 | 2012-03-21 | T14P221111C0 SS+14d, T14P223001C0, T14P205503C0 FF+18d |  |  |  |  | 39.46d | 0d | MECHANICAL [2467.2 h]; Cost |  |  |  |  | T14P223017C0 | PT | C | 14 | P2 | ME | 230 | 17 | BILL 10 | B10 | S2 | 1F | R00 | ACF04 | 230 |  | 1S | MEP |  |  |  |  |  |  |  | M1F |  |
| T14P227001C0 |  | PT-14 ; 1st Fix, Wiring/ Cabling work (PAT RM-2) | 48d | 2012-01-25 | 2012-03-22 | T14P226001C0, T14P226013C0, T14P227010C0 |  |  |  |  | 102.46d | 63d | ELECTRICAL [392.4 h]; Cost |  |  |  |  | T14P227001C0 | PT | C | 14 | P2 | ME | 270 | 01 | BILL 10 | B10 | S2 | 1F | R00 | ACF04 | 270 |  | 1S | MEP |  |  |  |  |  |  |  | M1F |  |
| T14P223023C0 |  | PT-14 ; 1st Fix, Inst of Main Ducting (PAT RM-2) | 60d | 2012-01-29 | 2012-04-09 | T14P223001C0, T14P223017C0 SS+10d |  |  |  |  | 39.46d | 0d | MECHANICAL [8022 h]; Cost |  |  |  |  | T14P223023C0 | PT | C | 14 | P2 | ME | 230 | 23 | BILL 10 | B10 | S2 | 1F | R00 | ACF04 | 230 |  | 1S | MEP |  |  |  |  |  |  |  | M1F |  |
| T14P221117C0 |  | PT-14 ; 1st Fix, Inst of Sprinkler branch pipe (PAT RM-2) | 48d | 2012-02-27 | 2012-04-23 | T14P209201C0, T14P221111C0, T14P205503C0 FF+18d |  |  |  |  | 75.46d | 36d | MECHANICAL [561.6 h]; Cost |  |  |  |  | T14P221117C0 | PT | C | 14 | P2 | ME | 211 | 17 | BILL 10 | B10 | S2 | 1F | R00 | ACF04 | 211 |  | 1S | MEP |  |  |  |  |  |  |  | M1F |  |
| T14P201005C0 |  | PT-14 ; 2nd, Wall Inspection by Consultant (PAT RM-2) | 6d | 2012-03-01 | 2012-03-08 | T14P222011C0, T14P222015C0, T14P226009C0 |  |  |  |  | 46.59d | 0d | Labor General [0.6 h]; Cost |  |  |  |  | T14P201005C0 | PT | C | 14 | P2 | ME | 010 | 05 | BILL 10 | B10 | S2 | WI | R00 | ACF07 | 010 |  | 2n | MEP |  |  |  |  |  |  |  |  |  |
| T14P209205C0 |  | PT-14 ; Partitions Closing (PAT RM-2) | 35.88d | 2012-03-08 | 2012-04-18 | T14P201005C0, T14P205511C0, T14P209203C0, T14P222005C0, T14P222019C0, TAFOA09214C1 FF, T14P209702C0 FF, T14P208103C0 FF |  |  |  |  | 46.59d | 0d | PARTITIONS [328 m]; PARTITIONS [2369 h]; Cost |  |  | 315 | 946 | T14P209205C0 | PT | C | 14 | P2 | PT | 092 | 05 | BILL 10 | B10 | S2 | FF | R00 | ACF06 | 092 |  |  | GP |  |  |  |  |  |  |  | P2F |  |
| T14P223009C0 |  | PT-14 ; 2nd Fix, Inst of VAV'S CHW connection (PAT RM-2) | 42d | 2012-03-21 | 2012-05-09 | T14P223017C0 |  |  |  |  | 61.46d | 22d | MECHANICAL [1450.8 h]; Cost |  |  |  |  | T14P223009C0 | PT | C | 14 | P2 | ME | 230 | 09 | BILL 10 | B10 | S2 | 2F | R00 | ACF07 | 230 |  | 2n | MEP |  |  |  |  |  |  |  |  |  |
| T14P223008C0 |  | PT-14 ; 1st Fix, Inst of VCD's/FD's (PAT RM-2) | 48d | 2012-04-09 | 2012-06-04 | T14P223023C0, T14P205503C0 FF+18d |  |  |  |  | 39.46d | 0d | MECHANICAL [1753.2 h]; Cost |  |  |  |  | T14P223008C0 | PT | C | 14 | P2 | ME | 230 | 08 | BILL 10 | B10 | S2 | 1F | R00 | ACF04 | 230 |  | 1S | MEP |  |  |  |  |  |  |  | M1F |  |
| T14P223015C0 |  | PT-14 ; 2nd Fix, Insulation of CHW pipe & Duct (PAT RM-2) | 48d | 2012-04-09 | 2012-06-04 | T14P223017C0, T14P223023C0 |  |  |  |  | 39.46d | 0d | MECHANICAL [3064.8 h]; Cost |  |  |  |  | T14P223015C0 | PT | C | 14 | P2 | ME | 230 | 15 | BILL 10 | B10 | S2 | 2F | R00 | ACF07 | 230 |  | 2n | MEP |  |  |  |  |  |  |  |  |  |
| T14P207103C0 |  | PT-14 ; Waterproofing (PAT RM-2) | 11.88d | 2012-04-18 | 2012-05-02 | T14P208103C0, T14P209205C0 |  |  |  |  | 173.21d | 57.25d | THERMAL & MOISTURE [384 h]; THERMAL & MOISTURE [2509 m2]; Cost |  |  | 105 | 999 | T14P207103C0 | PT | C | 14 | P2 | FF | 071 | 03 | BILL 10 | B10 | S2 | 01 | R00 | ACF03 | 071 |  |  |  |  |  |  |  |  |  |  |  |  |
| T14P209901C0 |  | PT-14 ; Wall Prime & 1st coat (PAT RM-2) | 30d | 2012-04-18 | 2012-05-23 | T14P209205C0 |  |  |  |  | 46.59d | 0d | WALL PAINT [415 h]; WALL PAINT [517 m2]; Cost |  |  | 328 | 956 | T14P209901C0 | PT | C | 14 | P2 | PA | 099 | 01 | BILL 10 | B10 | S2 | 01 | R00 | ACF06 | 099 |  |  |  |  |  |  |  |  |  |  |  |  |
| T14P226005C0 |  | PT-14 ; 2nd Fix, Wiring for Power/Lighting/Emergency (PAT RM-2) | 42d | 2012-04-18 | 2012-06-06 | T14P209205C0 |  |  |  |  | 102.59d | 0d | ELECTRICAL [392.4 h]; Cost |  |  |  |  | T14P226005C0 | PT | C | 14 | P2 | ME | 260 | 05 | BILL 10 | B10 | S2 | 2F | R00 | ACF07 | 260 |  | 2n | MEP |  |  |  |  |  |  |  |  |  |
| T14P226007C0 |  | PT-14 ; 2nd Fix, Cable Pulling (PAT RM-2) | 48d | 2012-04-18 | 2012-06-13 | T14P209201C0 SS+6d, T14P209205C0 |  |  |  |  | 137.09d | 106.03d | ELECTRICAL [2683.2 h]; Cost |  |  |  |  | T14P226007C0 | PT | C | 14 | P2 | ME | 260 | 07 | BILL 10 | B10 | S2 | 2F | R00 | ACF07 | 260 |  | 2n | MEP |  |  |  |  |  |  |  |  |  |
| T14P226011C0 |  | PT-14 ; 2nd Fix, Inst of Equipment (DB) (PAT RM-2) | 54d | 2012-04-18 | 2012-06-21 | T14P209205C0 |  |  |  |  | 125.09d | 75.12d | ELECTRICAL [878.4 h]; Cost |  |  |  |  | T14P226011C0 | PT | C | 14 | P2 | ME | 260 | 11 | BILL 10 | B10 | S2 | 2F | R00 | ACF04 | 260 |  | 2n | MEP |  |  |  |  |  |  |  |  | E |
| T14P226053C0 |  | PT-14 ; 2nd Fix, Wiring / Cabling (PAT RM-2) | 42d | 2012-04-18 | 2012-06-06 | T14P209203C0, T14P209205C0 |  |  |  |  | 60.59d | 21.12d | ELECTRICAL [392.4 h]; Cost |  |  | 389 | 977 | T14P226053C0 | PT | C | 14 | P2 | ME | 260 | 53 | BILL 10 | B10 | S2 | 2F | R00 | ACF07 | 260 |  | 2n | MEP |  |  |  |  |  |  |  |  |  |
| T14P205501C0 |  | PT-14 ; Handrails & balustrade (PAT RM-2) | 30.5d | 2012-05-23 | 2012-06-30 | T14P209901C0 |  |  |  |  | 46.59d | 2.62d | SECONDARY STEEL [174 h]; Cost |  |  |  |  | T14P205501C0 | PT | C | 14 | P2 | SW | 055 | 01 | BILL 10 | B10 | S2 | 01 | R00 | ACF03 | a |  |  |  |  |  |  |  |  |  |  |  |  |
| T14P209501C0 |  | PT-14 ; Ceiling Grid and Service Tile (PAT RM-2) | 24d | 2012-06-04 | 2012-07-03 | T14P205503C0, T14P209205C0 SS+15d, T14P221117C0, T14P223008C0, T14P223009C0, T14P223015C0, T14P227001C0, T14P226053C0 FF, T14P209901C0 |  |  |  |  | 39.46d | 0d | CEILING GRID FOR GYPSUM [3691.46 h]; CEILING GRID FOR GYPSUM [315.76 m2]; Cost |  |  | 323 | 952 | T14P209501C0 | PT | C | 14 | P2 | CE | 095 | 01 | BILL 10 | B10 | S2 | 01 | R00 | ACF06 | 095 |  |  |  |  |  |  |  |  |  |  |  |  |
| T14P209510C0 |  | PT-14 ; Patient Lift Ceiling Rail (by others) (PAT RM-2) | 30d | 2012-06-04 | 2012-07-10 | T14P209501C0 SS, T14P207103C0 FF |  |  |  |  | 115.96d | 84.9d | Labor General [0.1 h]; Cost |  |  | 323 | 952 | I06P109501C0 | PT | C | 14 | P2 | CE | 095 | 10 | BILL 10 | B10 | S2 | 02 | R00 | ACF06 | 095 |  |  |  |  |  |  |  |  |  |  |  |  |
| T14P226015C0 |  | PT-14 ; Final Fix, Termination & Gladding of Cables (PAT RM-2) | 36d | 2012-06-06 | 2012-07-19 | T14P226005C0 |  |  |  |  | 102.59d | 63.12d | ELECTRICAL [148.8 h]; Cost |  |  |  |  | T14P226015C0 | PT | C | 14 | P2 | ME | 260 | 15 | BILL 10 | B10 | S2 | FF | R00 | ACF07 | 260 |  | FF | MEP |  |  |  |  |  |  |  |  |  |
| T14P209305C0 |  | PT-14 ; Flooring (Terrazzo) (PAT RM-2) | 30d | 2012-07-03 | 2012-08-07 | T14P209501C0 |  |  |  |  | 49.96d | 0d | TERRAZO FLOOR [1073 m2]; TERRAZO FLOOR [1936 h]; Cost |  |  | 106 | 1000 | T14P209305C0 | PT | C | 14 | P2 | FF | 096 | 05 | BILL 10 | B10 | S2 | 07 | R00 | ACF06 | TZ |  |  |  |  |  |  |  |  |  |  |  |  |
| T14P209601C0 |  | PT-14 ; Flooring (Rubber & etc) (PAT RM-2) | 30d | 2012-07-03 | 2012-08-07 | T14P209501C0, T14P205501C0 |  |  |  |  | 43.96d | 0d | RUBBER FLOOR [24 h]; RUBBER FLOOR [58 m2]; Cost |  |  | 326 | 955 | T14P209601C0 | PT | C | 14 | P2 | FF | 096 | 01 | BILL 10 | B10 | S2 | 03 | R00 | ACF06 | RF |  |  |  |  |  |  |  |  |  |  |  |  |
| T14P209905C0 |  | PT-14 ; Ceiling Prime & 1st coat (PAT RM-2) | 30d | 2012-07-03 | 2012-08-07 | T14P209501C0 |  |  |  |  | 115.96d | 0d | CEILING PAINT [28 h]; CEILING PAINT [33 m2]; Cost |  |  | 330 | 958 | T14P209905C0 | PT | C | 14 | P2 | PA | 099 | 05 | BILL 10 | B10 | S2 | 01 | R00 | ACF06 | 099 |  |  |  |  |  |  |  |  |  |  |  |  |
| T14P221115C0 |  | PT-14 ; 2nd Fix, Inst of Sprinkler droppers (PAT RM-2) | 42d | 2012-07-03 | 2012-08-23 | T14P209501C0 |  |  |  |  | 39.46d | 0d | MECHANICAL [1602 h]; Cost |  |  |  |  | T14P221115C0 | PT | C | 14 | P2 | ME | 211 | 15 | BILL 10 | B10 | S2 | 2F | R00 | ACF07 | 211 |  | 2n | MEP |  |  |  |  |  |  |  |  |  |
| T14P223021C0 |  | PT-14 ; 2nd Fix, Inst of Flexible Duct & Plenum boxes (PAT RM-2) | 42d | 2012-07-03 | 2012-08-23 | T14P209205C0, T14P209501C0 |  |  |  |  | 39.46d | 0d | MECHANICAL [30 h]; Cost |  |  |  |  | T14P223021C0 | PT | C | 14 | P2 | ME | 230 | 21 | BILL 10 | B10 | S2 | 2F | R00 | ACF07 | 230 |  | 2n | MEP |  |  |  |  |  |  |  |  |  |
| T14P226017C0 |  | PT-14 ; Final Fix, Inst of Ceiling rose (PAT RM-2) | 36d | 2012-07-03 | 2012-08-14 | T14P209501C0 |  |  |  |  | 63.46d | 0d | ELECTRICAL [61.2 h]; Cost |  |  |  |  | T14P226017C0 | PT | C | 14 | P2 | ME | 260 | 17 | BILL 10 | B10 | S2 | FF | R00 | ACF07 | 260 |  | FF | MEP |  |  |  |  |  |  |  |  |  |
| T14P227002C0 |  | PT-14 ; 2nd Fix, Wiring Droppers (PAT RM-2) | 42d | 2012-07-03 | 2012-08-23 | T14P209501C0 |  |  |  |  | 69.46d | 0d | ELECTRICAL [392.4 h]; Cost |  |  |  |  | T14P227002C0 | PT | C | 14 | P2 | ME | 270 | 02 | BILL 10 | B10 | S2 | 2F | R00 | ACF07 | 270 |  | 2n | MEP |  |  |  |  |  |  |  |  |  |
| T14P227020C0 |  | PT-14 ; 2nd Fix, Inst of ELV Equipment (Panels) (PAT RM-2) | 66d | 2012-07-03 | 2012-09-20 | T14P209205C0, T14P209501C0 |  |  |  |  | 49.96d | 0d | ELECTRICAL [1819.2 h]; Cost |  |  |  |  | T14P227020C0 | PT | C | 14 | P2 | ME | 270 | 20 | BILL 10 | B10 | S2 | 2F | R00 | ACF04 | 270 |  | 2n | MEP |  |  |  |  |  |  |  |  | E |
| T14P240303C0 |  | PT-14 ; Final Fix, Pneumatic Station (PAT RM-2) | 36d | 2012-07-03 | 2012-08-14 | T14P209501C0 |  |  |  |  | 127.96d | 96.9d | MECHANICAL [2974.8 h]; Cost |  |  |  |  | T14P240303C0 | PT | C | 14 | P2 | ME | 403 | 03 | BILL 10 | B10 | S2 | FF | R00 | ACF07 | 403 |  | FF | MEP |  |  |  |  |  |  |  |  |  |
| T14P226003C0 |  | PT-14 ; Final Fix, Inst of Light fittings (PAT RM-2) | 48d | 2012-07-10 | 2012-09-06 | T14P209501C0, T14P226017C0 SS+6d |  |  |  |  | 63.46d | 24d | ELECTRICAL [7815.6 h]; Cost |  |  |  |  | T14P226003C0 | PT | C | 14 | P2 | ME | 260 | 03 | BILL 10 | B10 | S2 | FF | R00 | ACF07 | 260 |  | FF | MEP |  |  |  |  |  |  |  |  |  |
| T14P227030C0 |  | PT-14 ; Final Fix, Inst of ELV device (Detector/Speaker) (PAT RM-2) | 42d | 2012-07-10 | 2012-08-30 | T14P209501C0, T14P227002C0 SS+6d |  |  |  |  | 69.46d | 30d | ELECTRICAL [3571.2 h]; Cost |  |  |  |  | T14P227030C0 | PT | C | 14 | P2 | ME | 270 | 30 | BILL 10 | B10 | S2 | FF | R00 | ACF07 | 270 |  | FF | MEP |  |  |  |  |  |  |  |  |  |
| T14P208107C0 |  | PT-14 ; Doors (PAT RM-2) | 36d | 2012-08-07 | 2012-09-20 | T14P208103C0, T14P209501C0, T14P209601C0, T14P209901C0 |  |  |  |  | 81.71d | 0d | ASSORTED DOORS [430 h]; ASSORTED DOORS [43 no]; Cost |  |  | 317 | 948 | T14P208107C0 | PT | C | 14 | P2 | DO | 081 | 07 | BILL 10 | B10 | S2 | DR | R00 | ACF06 | 081 | 08 |  |  |  |  |  |  |  |  |  |  |  |
| T14P209903C0 |  | PT-14 ; Wall Final Paint (PAT RM-2) | 30d | 2012-08-07 | 2012-09-13 | T14P209901C0, T14P209905C0, T14P209501C0 |  |  |  |  | 115.96d | 72d | WALL PAINT [225 h]; WALL PAINT [279 m2]; Cost |  |  | 329 | 957 | T14P209903C0 | PT | C | 14 | P2 | PA | 099 | 03 | BILL 10 | B10 | S2 | 02 | R00 | ACF06 | 099 |  |  |  |  |  |  |  |  |  |  |  |  |
| T14P222025C0 |  | PT-14 ; Final Fix, Inst of Sanitary Ware (PAT RM-2) | 42d | 2012-08-07 | 2012-09-27 | T14P209205C0, T14P209305C0 |  |  |  |  | 49.96d | 0d | PLUMBING [3361.2 h]; Cost |  |  |  |  | T14P222025C0 | PT | C | 14 | P2 | ME | 220 | 25 | BILL 10 | B10 | S2 | FF | R00 | ACF07 | 220 |  | FF | MEP |  |  |  |  |  |  |  |  |  |
| T14P221113C0 |  | PT-14 ; Final Fix, Inst of Sprinklers head/ Extinguisher (PAT RM-2) | 36d | 2012-08-23 | 2012-10-04 | T14P209501C0, T14P221115C0 |  |  |  |  | 39.46d | 0d | MECHANICAL [234 h]; Cost |  |  |  |  | T14P221113C0 | PT | C | 14 | P2 | ME | 211 | 13 | BILL 10 | B10 | S2 | FF | R00 | ACF07 | 211 |  | FF | MEP |  |  |  |  |  |  |  |  |  |

| ID | WBS | Activity | Duration | Start | Finish | Predecessors | Complete | Remaining | Planned start | Planned finish | Total float | Free float | Resources | Cost | Actual cost | change id | CCAD BUILDING(SET) | CCAD PHASE(SET) | CCAD FLOOR(SET) | CCAD ZONE(SET) | CCAD WORK(SET) | CCAD SECTION(SET) | CCAD SERIAL No.(SET) | CCAD SUB ZONE MEP(SET) | CCAD CBS(SET) | CCAD BILL(SET) | CCAD HANDOVER(SET) | CCAD TAG(SET) | CCAD REV(SET) | CCADACF (SET) | CCAD CSA | CCAD SSCF | Change Order # | NEW ACTIVITY ID | CCAD DIVISION(SET) | user_number8 | user_integer1 | user_integer2 | user_number7 | July2011 Target% Complete | Claimed This Month | P_811 | P_711 | U% | Act Selector % | R3 Partitions | CCAD MEQ | R3 Finish |
| --- | --- | --- | --- | --- | --- | --- | --- | --- | --- | --- | --- | --- | --- | --- | --- | --- | --- | --- | --- | --- | --- | --- | --- | --- | --- | --- | --- | --- | --- | --- | --- | --- | --- | --- | --- | --- | --- | --- | --- | --- | --- | --- | --- | --- | --- | --- | --- | --- |
| T14P223019C0 |  | PT-14 ; Final Fix, Inst of Grilles & Diffusers (PAT RM-2) | 36d | 2012-08-23 | 2012-10-04 | T14P209501C0, T14P223021C0 |  |  |  |  | 39.46d | 0d | MECHANICAL [1498.8 h]; Cost |  |  | T14P223019C0 | PT | C | 14 | P2 | ME | 230 | 19 | FF | BILL 10 | B10 | S2 | FF | R00 | ACF07 | MEP | 230 |  |  |  |  |  |  |  |  |  |  |  |  |  |  |  |  |
| T14P206101C0 |  | PT-14 ; Wood / caseworks (PAT RM-2) | 48d | 2012-08-23 | 2012-10-18 | T13P206101C0 SS+5d, T14CO04407C0, T14P209501C0, T14P209601C0, T14P209901C0, TAFWA00101M0 |  |  |  |  | 31.06d | 0d | WOOD WORK/CASEWORK [659.26 no]; WOOD WORK/CASEWORK [1445 h]; Cost |  |  | T14P206101C0 | PT | C | 14 | P2 | WO | 061 | 01 |  | BILL 10 | B10 | S2 | WW | R00 | ACF06 |  | 061 | 332 | 960 |  |  |  |  |  |  |  |  |  |  |  |  |  |  |
| T14P206102C0 |  | PT-14 ; Head/Foot Wall (PAT RM-2) | 54d | 2012-08-23 | 2012-10-25 | T14CO04407C0, T14P209501C0, TAFWA00101M0, T14P206101C0 SS |  |  |  |  | 49.06d | 0d | WOOD WORK/CASEWORK [1649 h]; Cost |  |  | T14P206102C0 | PT | C | 14 | P2 | WO | 061 | 02 |  | BILL 10 | B10 | S2 | WW | R00 | ACF06 |  | 061 | 332 | 960 |  |  |  |  |  |  |  |  |  |  |  |  |  |  |
| T14P208709C0 |  | PT-14 ; Ironmongery (PAT RM-2) | 28.25d | 2012-09-20 | 2012-10-23 | T14P208107C0 |  |  |  |  | 81.71d | 50.65d | IRONMONGERY [610 h]; IRONMONGERY [61 no]; Cost |  |  | T14P208709C0 | PT | C | 14 | P2 | DO | 087 | 09 |  | BILL 10 | B10 | S2 | IM | R00 | ACF06 |  | 087 | 322 | 951 | 08 |  |  |  |  |  |  |  |  |  |  |  |  |  |
| T14P209701C0 |  | PT-14 ; Wall finishes (ST, WD, WC) (PAT RM-2) | 36d | 2012-09-20 | 2012-11-04 | T14P226011C0, T14P227020C0, T14P209501C0, T14P209601C0, T14P209305C0 |  |  |  |  | 49.96d | 0d | ASSORTED WALL FINISH [369 h]; ASSORTED WALL FINISH [423 m2]; Cost |  |  | T14P209701C0 | PT | C | 14 | P2 | WF | 097 | 01 |  | BILL 10 | B10 | S2 | 01 | R00 | ACF06 |  | 097 | 105 | 1002 |  |  |  |  |  |  |  |  |  |  |  |  |  |  |
| T14P222021C0 |  | PT-14 ; Final Fix, Terminate Sanitary Ware & Appliances (PAT RM-2) | 42d | 2012-09-27 | 2012-11-19 | T14P222011C0, T14P222025C0 |  |  |  |  | 49.96d | 18.9d | PLUMBING [3361.2 h]; Cost |  |  | T14P222021C0 | PT | C | 14 | P2 | ME | 220 | 21 | FF | BILL 10 | B10 | S2 | FF | R00 | ACF07 | MEP | 220 |  |  |  |  |  |  |  |  |  |  |  |  |  |  |  |  |
| T14P201006C0 |  | PT-14 ; 2nd, Ceiling Inspection by Consultants (PAT RM-2) | 4.5d | 2012-10-04 | 2012-10-09 | T14P221115C0, T14P223009C0, T14P223015C0, T14P227002C0, T14P209501C0, T14P221113C0, T14P223019C0, T14P226015C0, T14P226017C0, T14P226003C0, T14P227030C0 |  |  |  |  | 39.46d | 8.4d | Labor General [0.6 h]; Cost |  |  | T14P201006C0 | PT | C | 14 | P2 | ME | 010 | 06 | 2n | BILL 10 | B10 | S2 | CI | R00 | ACF07 | MEP | 010 |  |  |  |  |  |  |  |  |  |  |  |  |  |  |  |  |
| T14P209503C0 |  | PT-14 ; Ceiling closure - ACT/Gypsum (PAT RM-2) | 24d | 2012-10-18 | 2012-11-19 | T14P201006C0, T14P209510C0, T14P221115C0, T14P226005C0, T14P227001C0, T14P227002C0, TAFOA09513C1 FF, T14P206101C0, T14P223021C0, T14P226007C0 |  |  |  |  | 31.06d | 0d | ASSORTED CEILING FINISH [416.36 h]; CEILING GYPSUM [103.53 h]; ASSORTED CEILING FINISH [677 m2]; CEILING GYPSUM [316 m2]; Cost |  |  | T14P209503C0 | PT | C | 14 | P2 | CE | 095 | 03 |  | BILL 10 | B10 | S2 | 02 | R00 | ACF06 |  | 095 | 324 | 953 |  |  |  |  |  |  |  |  |  |  |  |  |  |  |
| T14P222029C0 |  | PT-14 ; Final Fix, Medical Gas pipe (PAT RM-2) | 18d | 2012-10-25 | 2012-11-19 | T14P209501C0, T14P206102C0 |  |  |  |  | 49.06d | 18d | PLUMBING [1149.6 h]; Cost |  |  | T14P222029C0 | PT | C | 14 | P2 | ME | 220 | 29 | FF | BILL 10 | B10 | S2 | FF | R00 | ACF07 | MEP | 220 |  |  |  |  |  |  |  |  |  |  |  |  |  |  |  |  |
| T14P211001C0 |  | PT-14 ; Wall Protection (WP, CG, WG, FCG) (PAT RM-2) | 24d | 2012-11-04 | 2012-12-04 | T14P209701C0, T14P209903C0 SS |  |  |  |  | 49.96d | 18.9d | FF&E [18 h]; Cost |  |  | T14P211001C0 | PT | C | 14 | P2 | WF | 110 | 01 |  | BILL 10 | B10 | S2 | 03 | R00 | ACF08 |  | b | 326 | 1001 |  |  |  |  |  |  |  |  |  |  |  |  |  |  |
| T14P209684C1 |  | PT-14, Carpet Tile Finish (Patient Room-2) | 0d | 2012-11-19 | 2012-11-19 | T14P209907C0 SS |  |  |  |  | 61.06d | 36.27d | Cost |  |  |  | PT | C | 14 | P2 | FF | 096 |  |  |  | B10 |  |  | R00 | ACF06 | CPT | CPT |  |  |  |  |  |  |  |  |  |  |  |  |  |  |  |  |
| T14P209907C0 |  | PT-14 ; Ceiling Final paint (PAT RM-2) | 18d | 2012-11-19 | 2012-12-11 | T14P209601C0, T14P209905C0, T14P209503C0 |  |  |  |  | 43.06d | 0d | CEILING PAINT [15 h]; CEILING PAINT [18 m2]; Cost |  |  | T14P209907C0 | PT | C | 14 | P2 | PA | 099 | 07 |  | BILL 10 | B10 | S2 | 02 | R00 | ACF06 |  | 099 | 331 | 959 |  |  |  |  |  |  |  |  |  |  |  |  |  |  |
| T14P211003C0 |  | PT-14 ; FF & E (PAT RM-2) | 18d | 2012-11-19 | 2012-12-11 | T14P209601C0, T14P206101C0, T14P209503C0 |  |  |  |  | 43.06d | 12d | FF&E [715 h]; Cost |  |  | T14P211003C0 | PT | C | 14 | P2 | WO | 110 | 03 |  | BILL 10 | B10 | S2 | 04 | R00 | ACF08 |  | a | 333 | 961 |  |  |  |  |  |  |  |  |  |  |  |  |  |  |
| T14P222027C0 |  | PT-14 ; Final Fix, Inst of All drain (PAT RM-2) | 18d | 2012-11-19 | 2012-12-11 | T14P209305C0, T14P209503C0 |  |  |  |  | 31.06d | 0d | PLUMBING [1378.8 h]; Cost |  |  | T14P222027C0 | PT | C | 14 | P2 | ME | 220 | 27 | FF | BILL 10 | B10 | S2 | FF | R00 | ACF07 | MEP | 220 |  |  |  |  |  |  |  |  |  |  |  |  |  |  |  |  |
| T14P226019C0 |  | PT-14 ; Final Fix, Inst of Switch/Sockets (PAT RM-2) | 18d | 2012-11-19 | 2012-12-11 | T14P209901C0, T14P209503C0 |  |  |  |  | 31.06d | 0d | ELECTRICAL [362.4 h]; Cost |  |  | T14P226019C0 | PT | C | 14 | P2 | ME | 260 | 19 | FF | BILL 10 | B10 | S2 | FF | R00 | ACF07 | MEP | 260 |  |  |  |  |  |  |  |  |  |  |  |  |  |  |  |  |
|  | 10 | **Precommissioning Tesing & snagging (PAT RM-2)** |  | 2012-12-11 | 2013-01-26 |  |  |  |  |  |  |  |  |  |  |  |  |  |  |  |  |  |  |  |  |  |  |  |  |  |  |  |  |  |  |  |  |  |  |  |  |  |  |  |  |  |  |  |
| T14TS01805C0 |  | PT-14 ; MEP de-snag, FIREM sign-off | 12d | 2012-12-11 | 2012-12-25 | T14P222025C0, T14P222027C0, T14P226015C0, T14P222021C0, T14P221113C0, T14P223019C0, T14P240303C0, T14P222029C0, T14P226017C0, T14P226003C0, T14P227030C0, T14P226019C0 |  |  |  |  | 31.06d | 0d | TESTING & COMMISSIONING [510 h]; Cost |  |  | T14TS01801C0 | PT | C | 14 | TS | SC | 018 | 01 |  | BILL 10 | B10 | S2 | 01 | R00 | ACF07 |  | 018 |  |  |  |  |  |  |  |  |  |  |  |  |  |  |  |  |
| T14TS01808C0 |  | PT-14 ; Touch-up & Clean / JV inspection /CIR /De-snag | 18d | 2012-12-25 | 2013-01-16 | T14P205501C0, T14P205511C0, T14P206101C0, T14P206102C0, T14P208709C0, T14P209305C0, T14P209601C0, T14P209701C0, T14P209903C0, T14P209907C0, T14P211001C0, T14P211003C0, T14TS01805C0, T14P209503C0 |  |  |  |  | 31.06d | 0d | TESTING & COMMISSIONING [128 h]; Cost |  |  | T14TS01802C0 | PT | C | 14 | TS | SC | 018 | 02 |  | BILL 10 | B10 | S2 | 02 | R00 | ACF07 |  | 018 |  |  |  |  |  |  |  |  |  |  |  |  |  |  |  |  |
| T14TS01811C0 |  | PT-14 ; Consultant's final de-snag inspection | 7d | 2013-01-16 | 2013-01-26 | T14TS01808C0 |  |  |  |  | 31.06d | 22.06d | Labor General [1 h]; Cost |  |  | T14TS01803C0 | PT | C | 14 | TS | SC | 018 | 03 |  | BILL 10 | B10 | S2 | 03 | R00 | ACF07 |  | 018 |  |  |  |  |  |  |  |  |  |  |  |  |  |  |  |  |
|  | 04 | **Public Area ( Elev.Lobby & Corridors )** |  | 2011-08-02 | 2013-02-14 |  |  |  |  |  |  |  |  |  |  |  |  |  |  |  |  |  |  |  |  |  |  |  |  |  |  |  |  |  |  |  |  |  |  |  |  |  |  |  |  |  |  |  |
| T14PA23001C0 |  | PT-14 ; 1st Fix, Inst. of Supports for MEP (Public Area) | 53.88d | 2011-08-02 A | 2011-11-02 | T14CO07807C0 | 50% | 26.94d | 2011-08-15 | 2011-10-18 | 14.34d | 0d | MECHANICAL [800.4 h]; Cost [45150.4 AED] | 45,150.38 | 22,575.19 | S08PA23001C0 | PT | C | 14 | PA | ME | 230 | 01 | 1S | BILL 10 | B10 | S2 | 1F | R00 | ACF04 | MEP | 230 |  |  |  | 0 | 0 | 0 | 0 | 25 | 2618.72 | 10 | 0 | 20 | M1F |  |  |  |
| T14PA09201C0 |  | PT-14 ; Metal Studs (Public Area) | 30d | 2011-09-05 A | 2011-11-28 | T14PA23001C0 SS+12d, TAFCI09202R02 FS+72d, T14PA23001C0 FF | 45% | 16.5d | 2011-11-01 | 2011-12-11 | 62d | 0d | PARTITIONS [5687 h]; PARTITIONS - Metal Studs [789 m]; Cost |  |  | S08PA09201C0 | PT | C | 14 | PA | PT | 092 | 01 |  | BILL 10 | B10 | S2 | 1F | R00 | ACF06 | GP | 092 | 313 | 944 |  |  |  |  |  |  |  |  |  | 45 | PMS | R3 |  |  |
| T14PA09203C0 |  | PT-14 ; Partitions early wall & 1st face (Public Area) | 33d | 2011-09-05 A | 2012-01-03 | T14PA09201C0 | 12% | 29.04d | 2011-11-19 | 2011-12-28 | 80.96d | 49.5d | PARTITIONS [789 m]; PARTITIONS [4449 h]; Cost |  |  | S08PA09203C0 | PT | C | 14 | PA | PT | 092 | 03 |  | BILL 10 | B10 | S2 | 2F | R00 | ACF06 | GP | 092 | 314 | 945 |  |  |  |  |  |  |  |  |  |  | P1F |  |  |  |
| T14PA26001C0 |  | PT-14 ; 1st Fix, Inst of Trunking/Conduiting (Public Area) | 60d | 2011-11-02 | 2012-01-18 | T14CO07807C0, T14PA23001C0 |  |  |  |  | 14.34d | 0d | ELECTRICAL [4268.4 h]; Cost |  |  | S08PA26001C0 | PT | C | 14 | PA | ME | 260 | 01 | 1S | BILL 10 | B10 | S2 | 1F | R00 | ACF04 | MEP | 260 |  |  |  |  |  |  |  | 20 | 13775.7 |  |  |  | M1F |  |  |  |
| T14PA27010C0 |  | PT-14 ; 1st Fix, Inst of Trunking for ELV system (Public Area) | 54d | 2011-11-16 | 2012-01-22 | T14CO07807C0, T14PA23001C0, T14PA26001C0 SS+9d |  |  |  |  | 14.34d | 0d | ELECTRICAL [3202.8 h]; Cost |  |  | S08PA27010C0 | PT | C | 14 | PA | ME | 270 | 10 | 1S | BILL 10 | B10 | S2 | 1F | R00 | ACF04 | MEP | 270 |  |  |  |  |  |  |  |  |  |  |  |  | M1F |  |  |  |
| T14PA26013C0 |  | PT-14 ; 1st Fix, Inst of Cable Tray (Public Area) | 48d | 2011-11-28 | 2012-01-25 | T14CO07807C0, T14PA23001C0, T14PA27010C0 SS+9d |  |  |  |  | 14.34d | 0d | ELECTRICAL [399.6 h]; Cost |  |  | S08PA26013C0 | PT | C | 14 | PA | ME | 260 | 13 | 1S | BILL 10 | B10 | S2 | 1F | R00 | ACF04 | MEP | 260 |  |  |  |  |  |  |  |  |  |  |  |  | M1F |  |  |  |
| T14PA22011C0 |  | PT-14 ; 2nd Fix, Drainage/Water pipe (wall) (Public Area) | 42d | 2011-11-28 | 2012-01-18 | T14PA09201C0 |  |  |  |  | 62d | 0d | PLUMBING [1378.8 h]; Cost |  |  | S08PA22011C0 | PT | C | 14 | PA | ME | 220 | 11 | 2n | BILL 10 | B10 | S2 | 2F | R00 | ACF07 | MEP | 220 |  |  |  |  |  |  |  |  |  |  |  |  |  |  |  |  |
| T14PA26009C0 |  | PT-14 ; 2nd Fix, Inst of Wall conduites (Public Area) | 42d | 2011-11-28 | 2012-01-18 | T14PA09201C0 |  |  |  |  | 62d | 0d | ELECTRICAL [734.4 h]; Cost |  |  | S08PA26009C0 | PT | C | 14 | PA | ME | 260 | 09 | 2n | BILL 10 | B10 | S2 | 2F | R00 | ACF07 | MEP | 260 |  |  |  |  |  |  |  | 25 | 4438.43 |  |  |  |  |  |  |  |
| T14PA22019C0 |  | PT-14 ; 1st Fix, Inst of Drainage pipe (ceiling) (Public Area) | 54d | 2011-12-10 | 2012-02-13 | T14PA23001C0, T14PA26013C0 SS+9d |  |  |  |  | 14.34d | 0d | PLUMBING [2326.8 h]; Cost |  |  | S08PA22019C0 | PT | C | 14 | PA | ME | 220 | 19 | 1S | BILL 10 | B10 | S2 | 1F | R00 | ACF04 | MEP | 220 |  |  |  |  |  |  |  |  |  |  |  |  | M1F |  |  |  |
| T14PA22005C0 |  | PT-14 ; 1st Fix, Inst of Water supply pipe (ceiling) (Public Area) | 60d | 2011-12-21 | 2012-03-03 | T14PA22019C0 SS+10d, T14PA23001C0 |  |  |  |  | 14.34d | 0d | PLUMBING [4548 h]; Cost |  |  | S08PA22005C0 | PT | C | 14 | PA | ME | 220 | 05 | 1S | BILL 10 | B10 | S2 | 1F | R00 | ACF04 | MEP | 220 |  |  |  |  |  |  |  |  |  |  |  |  | M1F |  |  |  |
| T14PA21111C0 |  | PT-14 ; 1st Fix, Inst of Sprinkler main pipe (Public Area) | 48d | 2012-01-02 | 2012-02-28 | T14PA22005C0 SS+9d, T14PA23001C0 |  |  |  |  | 14.34d | 0d | MECHANICAL [1236 h]; Cost |  |  | S08PA21111C0 | PT | C | 14 | PA | ME | 211 | 11 | 1S | BILL 10 | B10 | S2 | 1F | R00 | ACF04 | MEP | 211 |  |  |  |  |  |  |  |  |  |  |  |  | M1F |  |  |  |
| T14PA23017C0 |  | PT-14 ; 1st Fix, Inst of CHW pipe (Public Area) | 54d | 2012-01-16 | 2012-03-20 | T14PA21111C0 SS+12d, T14PA23001C0 |  |  |  |  | 14.34d | 0d | MECHANICAL [2467.2 h]; Cost |  |  | S08PA23017C0 | PT | C | 14 | PA | ME | 230 | 17 | 1S | BILL 10 | B10 | S2 | 1F | R00 | ACF04 | MEP | 230 |  |  |  |  |  |  |  |  |  |  |  |  | M1F |  |  |  |
| T14PA01005C0 |  | PT-14 ; 2nd, Wall Inspection by Consultant (Public Area) | 6d | 2012-01-18 | 2012-01-25 | T14PA22011C0, T14PA26009C0 |  |  |  |  | 62d | 30.54d | Labor General [0.6 h]; Cost |  |  | S08PA01005C0 | PT | C | 14 | PA | ME | 010 | 05 | 2n | BILL 10 | B10 | S2 | WI | R00 | ACF07 | MEP | 010 |  |  |  |  |  |  |  |  |  |  |  |  |  |  |  |  |
| T14PA08103C0 |  | PT-14 ; Door Frames (Public Area) | 36d | 2012-01-19 | 2012-03-01 | T14PA09201C0, GNHE08101C0 FS+126d, T14P208103C0 SS+3d |  |  |  |  | 67.38d | 0d | ASSORTED DOORS [448 h]; Cost |  |  | S08PA08103C0 | PT | C | 14 | PA | DO | 081 | 03 |  | BILL 10 | B10 | S2 | DF | R00 | ACF06 |  | 081 | 316 | 947 | 08 |  |  |  |  |  |  |  |  |  |  |  |  |  |
| T14PA27001C0 |  | PT-14 ; 1st Fix, Wiring/ Cabling work (Public Area) | 48d | 2012-01-25 | 2012-03-22 | T14PA26001C0, T14PA26013C0, T14PA27010C0 |  |  |  |  | 102.34d | 88d | ELECTRICAL [392.4 h]; Cost |  |  | S08PA27001C0 | PT | C | 14 | PA | ME | 270 | 01 | 1S | BILL 10 | B10 | S2 | 1F | R00 | ACF04 | MEP | 270 |  |  |  |  |  |  |  |  |  |  |  |  | M1F |  |  |  |
| T14PA23023C0 |  | PT-14 ; 1st Fix, Inst of Main Ducting (Public Area) | 60d | 2012-01-26 | 2012-04-07 | T14PA23001C0, T14PA23017C0 SS+9d |  |  |  |  | 41.34d | 0d | MECHANICAL [8022 h]; Cost |  |  | S08PA23023C0 | PT | C | 14 | PA | ME | 230 | 23 | 1S | BILL 10 | B10 | S2 | 1F | R00 | ACF04 | MEP | 230 |  |  |  |  |  |  |  |  |  |  |  |  | M1F |  |  |  |
| T14PA21117C0 |  | PT-14 ; 1st Fix, Inst of Sprinkler branch pipe (Public Area) | 48d | 2012-02-28 | 2012-04-24 | T14PA09201C0, T14PA21111C0 |  |  |  |  | 74.34d | 60d | MECHANICAL [561.6 h]; Cost |  |  | S08PA21117C0 | PT | C | 14 | PA | ME | 211 | 17 | 1S | BILL 10 | B10 | S2 | 1F | R00 | ACF04 | MEP | 211 |  |  |  |  |  |  |  |  |  |  |  |  | M1F |  |  |  |
| T14PA09205C0 |  | PT-14 ; Partitions Closing (Public Area) | 35.88d | 2012-03-03 | 2012-04-12 | T14PA01005C0, T14PA09203C0, T14PA22005C0, T14PA22019C0, TAFOA09214C1 FF, TAFCI22011R02 FS+72d, T14PA08103C0 FF |  |  |  |  | 31.46d | 0d | PARTITIONS [789 m]; PARTITIONS [5697 h]; Cost |  |  | S08PA09205C0 | PT | C | 14 | PA | PT | 092 | 05 |  | BILL 10 | B10 | S2 | FF | R00 | ACF06 | GP | 092 | 315 | 946 |  |  |  |  |  |  |  |  |  |  | P2F | R3 |  |  |
| T14PA23009C0 |  | PT-14 ; 2nd Fix, Inst of VAV'S CHW connection (Public Area) | 42d | 2012-03-20 | 2012-05-08 | T14PA23017C0 |  |  |  |  | 14.34d | 0d | MECHANICAL [1450.8 h]; Cost |  |  | S08PA23009C0 | PT | C | 14 | PA | ME | 230 | 09 | 2n | BILL 10 | B10 | S2 | 2F | R00 | ACF07 | MEP | 230 |  |  |  |  |  |  |  |  |  |  |  |  |  |  |  |  |
| T14PA23008C0 |  | PT-14 ; 1st Fix, Inst of VCD's/FD's (Public Area) | 48d | 2012-04-07 | 2012-06-02 | T14PA23023C0 |  |  |  |  | 41.34d | 27d | MECHANICAL [1753.2 h]; Cost |  |  | S08PA23008C0 | PT | C | 14 | PA | ME | 230 | 08 | 1S | BILL 10 | B10 | S2 | 1F | R00 | ACF04 | MEP | 230 |  |  |  |  |  |  |  |  |  |  |  |  | M1F |  |  |  |
| T14PA09901C0 |  | PT-14 ; Wall Prime & 1st coat (Public Area) | 30d | 2012-04-12 | 2012-05-17 | T14PA09205C0 |  |  |  |  | 53.46d | 0d | WALL PAINT [866 h]; WALL PAINT [1080 m2]; Cost |  |  | S08PA09901C0 | PT | C | 14 | PA | PA | 099 | 01 |  | BILL 10 | B10 | S2 | 01 | R00 | ACF06 |  | 099 | 328 | 956 |  |  |  |  |  |  |  |  |  |  |  |  |  |  |
| T14PA26005C0 |  | PT-14 ; 2nd Fix, Wiring for Power/Lighting/Emergency (Public Area) | 42d | 2012-04-12 | 2012-05-31 | T14PA09205C0 |  |  |  |  | 107.46d | 0d | ELECTRICAL [392.4 h]; Cost |  |  | S08PA26005C0 | PT | C | 14 | PA | ME | 260 | 05 | 2n | BILL 10 | B10 | S2 | 2F | R00 | ACF07 | MEP | 260 |  |  |  |  |  |  |  |  |  |  |  |  |  |  |  |  |
| T14PA26007C0 |  | PT-14 ; 2nd Fix, Cable Pulling (Public Area) | 48d | 2012-04-12 | 2012-06-07 | T14PA09201C0 SS+6d, T14PA09205C0 |  |  |  |  | 141.96d | 127.62d | ELECTRICAL [2683.2 h]; Cost |  |  | S08PA26007C0 | PT | C | 14 | PA | ME | 260 | 07 | 2n | BILL 10 | B10 | S2 | 2F | R00 | ACF07 | MEP | 260 |  |  |  |  |  |  |  |  |  |  |  |  |  |  |  |  |
| T14PA26011C0 |  | PT-14 ; 2nd Fix, Inst of Equipment (DB) (Public Area) | 54d | 2012-04-12 | 2012-06-14 | T14PA09205C0 |  |  |  |  | 130.21d | 105.12d | ELECTRICAL [878.4 h]; Cost |  |  | S08PA26011C0 | PT | C | 14 | PA | ME | 260 | 11 | 2n | BILL 10 | B10 | S2 | 2F | R00 | ACF04 | MEP | 260 |  |  |  |  |  |  |  |  |  |  |  |  |  |  | E |  |
| T14PA26053C0 |  | PT-14 ; 2nd Fix, Wiring / Cabling (Public Area) | 42d | 2012-04-12 | 2012-05-31 | T14PA09203C0, T14PA09205C0 |  |  |  |  | 65.46d | 51.12d | ELECTRICAL [392.4 h]; Cost |  |  | S08PA26053C0 | PT | C | 14 | PA | ME | 260 | 53 | 2n | BILL 10 | B10 | S2 | 2F | R00 | ACF07 | MEP | 260 | 389 | 977 |  |  |  |  |  |  |  |  |  |  |  |  |  |  |
| T14PA23015C0 |  | PT-14 ; 2nd Fix, Insulation of CHW pipe & Duct (Public Area) | 48d | 2012-05-08 | 2012-07-04 | T14PA23009C0, T14PA23017C0, T14PA23023C0 |  |  |  |  | 14.34d | 0d | MECHANICAL [3064.8 h]; Cost |  |  | S08PA23015C0 | PT | C | 14 | PA | ME | 230 | 15 | 2n | BILL 10 | B10 | S2 | 2F | R00 | ACF07 | MEP | 230 |  |  |  |  |  |  |  |  |  |  |  |  |  |  |  |  |
| T14PA05501C0 |  | PT-14 ; Handrails & balustrade (Public Area) | 30.5d | 2012-05-17 | 2012-06-24 | T14PA09901C0, TAFT105509C0, TAFT805509C0 |  |  |  |  | 84.46d | 32.62d | SECONDARY STEEL [356 h]; Cost |  |  | S08PA05501C0 | PT | C | 14 | PA | SW | 055 | 01 |  | BILL 10 | B10 | S2 | 01 | R00 | ACF03 |  | a |  |  |  |  |  |  |  |  |  |  |  |  |  |  |  |  |
| T14PA26015C0 |  | PT-14 ; Final Fix, Termination & Gladding of Cables (Public Area) | 36d | 2012-05-31 | 2012-07-14 | T14PA26005C0 |  |  |  |  | 107.46d | 93.12d | ELECTRICAL [148.8 h]; Cost |  |  | S08PA26015C0 | PT | C | 14 | PA | ME | 260 | 15 | FF | BILL 10 | B10 | S2 | FF | R00 | ACF07 | MEP | 260 |  |  |  |  |  |  |  |  |  |  |  |  |  |  |  |  |
| T14PA09501C0 |  | PT-14 ; Ceiling Grid and Service Tile (Public Area) | 24d | 2012-07-04 | 2012-08-01 | T14PA09205C0 SS+15d, T14PA21117C0, T14PA23008C0, T14PA23009C0, T14PA23015C0, T14PA27001C0, TAFCI22022R02 FS+72d, T14PA26053C0 FF, T14PA09901C0 |  |  |  |  | 14.34d | 0d | CEILING GRID FOR GYPSUM [7543.63 h]; CEILING GRID FOR GYPSUM [645.55 m2]; Cost |  |  | S08PA09501C0 | PT | C | 14 | PA | CE | 095 | 01 |  | BILL 10 | B10 | S2 | 01 | R00 | ACF06 |  | 095 | 323 | 952 |  |  |  |  |  |  |  |  |  |  |  |  |  | R3 |
| T14PA09601C0 |  | PT-14 ; Flooring (Rubber & etc) (Public Area) | 30d | 2012-08-01 | 2012-09-08 | TAFCI22022R02 FS+72d, T14PA09501C0 |  |  |  |  | 51.84d | 0d | RUBBER FLOOR [48 h]; RUBBER FLOOR [120 m2]; Cost |  |  | S08PA09601C0 | PT | C | 14 | PA | FF | 096 | 01 |  | BILL 10 | B10 | S2 | 03 | R00 | ACF06 |  | RF | 326 | 955 |  |  |  |  |  |  |  |  |  |  |  |  |  | R3 |
| T14PA09602C0 |  | PT-14 ; Flooring (Stone) (Public Area) | 30d | 2012-08-01 | 2012-09-08 | TAFCI22022R02 FS+72d, T14PA09501C0, T14PA05501C0 |  |  |  |  | 51.84d | 0d | STONE FLOOR [27 m2]; STONE FLOOR [24 h]; Cost |  |  | S08PA09601C0 | PT | C | 14 | PA | FF | 096 | 01 |  | BILL 10 | B10 | S2 | 09 | R00 | ACF06 |  | ST | 326 | 955 |  |  |  |  |  |  |  |  |  |  |  |  |  | R3 |
| T14PA09905C0 |  | PT-14 ; Ceiling Prime & 1st coat (Public Area) | 30d | 2012-08-01 | 2012-09-08 | T14PA09501C0 |  |  |  |  | 91.09d | 0d | CEILING PAINT [55 h]; CEILING PAINT [67 m2]; Cost |  |  | S08PA09905C0 | PT | C | 14 | PA | PA | 099 | 05 |  | BILL 10 | B10 | S2 | 01 | R00 | ACF06 |  | 099 | 330 | 958 |  |  |  |  |  |  |  |  |  |  |  |  |  |  |
| T14PA21115C0 |  | PT-14 ; 2nd Fix, Inst of Sprinkler droppers (Public Area) | 42d | 2012-08-01 | 2012-09-22 | T14PA09501C0 |  |  |  |  | 14.34d | 0d | MECHANICAL [1602 h]; Cost |  |  | S08PA21115C0 | PT | C | 14 | PA | ME | 211 | 15 | 2n | BILL 10 | B10 | S2 | 2F | R00 | ACF07 | MEP | 211 |  |  |  |  |  |  |  |  |  |  |  |  |  |  |  |  |
| T14PA23021C0 |  | PT-14 ; 2nd Fix, Inst of Flexible Duct & Plenum boxes (Public Area) | 42d | 2012-08-01 | 2012-09-22 | T14PA09205C0, T14PA09501C0 |  |  |  |  | 14.34d | 0d | MECHANICAL [30 h]; Cost |  |  | S08PA23021C0 | PT | C | 14 | PA | ME | 230 | 21 | 2n | BILL 10 | B10 | S2 | 2F | R00 | ACF07 | MEP | 230 |  |  |  |  |  |  |  |  |  |  |  |  |  |  |  |  |
| T14PA26017C0 |  | PT-14 ; Final Fix, Inst of Ceiling rose (Public Area) | 36d | 2012-08-01 | 2012-09-15 | T14PA09501C0 |  |  |  |  | 38.34d | 0d | ELECTRICAL [61.2 h]; Cost |  |  | S08PA26017C0 | PT | C | 14 | PA | ME | 260 | 17 | FF | BILL 10 | B10 | S2 | FF | R00 | ACF07 | MEP | 260 |  |  |  |  |  |  |  |  |  |  |  |  |  |  |  |  |
| T14PA27002C0 |  | PT-14 ; 2nd Fix, Wiring Droppers (Public Area) | 42d | 2012-08-01 | 2012-09-22 | T14PA09501C0 |  |  |  |  | 44.34d | 0d | ELECTRICAL [392.4 h]; Cost |  |  | S08PA27002C0 | PT | C | 14 | PA | ME | 270 | 02 | 2n | BILL 10 | B10 | S2 | 2F | R00 | ACF07 | MEP | 270 |  |  |  |  |  |  |  |  |  |  |  |  |  |  |  |  |
| T14PA27020C0 |  | PT-14 ; 2nd Fix, Inst of ELV Equipment (Panels) (Public Area) | 66d | 2012-08-01 | 2012-10-20 | T14PA09205C0, T14PA09501C0 |  |  |  |  | 25.09d | 0d | ELECTRICAL [1819.2 h]; Cost |  |  | S08PA27020C0 | PT | C | 14 | PA | ME | 270 | 20 | 2n | BILL 10 | B10 | S2 | 2F | R00 | ACF04 | MEP | 270 |  |  |  |  |  |  |  |  |  |  |  |  |  |  | E |  |
| T14PA26003C0 |  | PT-14 ; Final Fix, Inst of Light fittings (Public Area) | 48d | 2012-08-08 | 2012-10-06 | T14PA09501C0, T14PA26017C0 SS+6d |  |  |  |  | 38.34d | 24d | ELECTRICAL [7815.6 h]; Cost |  |  | S08PA26003C0 | PT | C | 14 | PA | ME | 260 | 03 | FF | BILL 10 | B10 | S2 | FF | R00 | ACF07 | MEP | 260 |  |  |  |  |  |  |  |  |  |  |  |  |  |  |  |  |
| T14PA27030C0 |  | PT-14 ; Final Fix, Inst of ELV devise (Detector/Speaker) (Public Area) | 42d | 2012-08-08 | 2012-09-29 | T14PA09501C0, T14PA27002C0 SS+6d |  |  |  |  | 44.34d | 30d | ELECTRICAL [3571.2 h]; Cost |  |  | S08PA27030C0 | PT | C | 14 | PA | ME | 270 | 30 | FF | BILL 10 | B10 | S2 | FF | R00 | ACF07 | MEP | 270 |  |  |  |  |  |  |  |  |  |  |  |  |  |  |  |  |
| T14PA08107C0 |  | PT-14 ; Doors (Public Area) | 36d | 2012-09-08 | 2012-10-20 | T14PA08103C0, T14PA09501C0, T14PA09601C0, T14PA09901C0, T14PA09602C0 |  |  |  |  | 51.84d | 0d | ASSORTED DOORS [900 h]; ASSORTED DOORS [90 no]; Cost |  |  | S08PA08107C0 | PT | C | 14 | PA | DO | 081 | 07 |  | BILL 10 | B10 | S2 | DR | R00 | ACF06 |  | 081 | 317 | 948 | 08 |  |  |  |  |  |  |  |  |  |  |  |  |  |
| T14PA09903C0 |  | PT-14 ; Wall Final Paint (Public Area) | 30d | 2012-09-08 | 2012-10-13 | T14PA09901C0, T14PA09905C0, T14PA09501C0 |  |  |  |  | 91.09d | 72d | WALL PAINT [467 h]; WALL PAINT [581 m2]; Cost |  |  | S08PA09903C0 | PT | C | 14 | PA | PA | 099 | 03 |  | BILL 10 | B10 | S2 | 02 | R00 | ACF06 |  | 099 | 329 | 957 |  |  |  |  |  |  |  |  |  |  |  |  |  |  |
| T14PA21113C0 |  | PT-14 ; Final Fix, Inst of Sprinklers head/ Extinguisher (Public Area) | 36d | 2012-09-22 | 2012-11-05 | T14PA09501C0, T14PA21115C0 |  |  |  |  | 14.34d | 0d | MECHANICAL [234 h]; Cost |  |  | S08PA21113C0 | PT | C | 14 | PA | ME | 211 | 13 | FF | BILL 10 | B10 | S2 | FF | R00 | ACF07 | MEP | 211 |  |  |  |  |  |  |  |  |  |  |  |  |  |  |  |  |
| T14PA23019C0 |  | PT-14 ; Final Fix, Inst of Grilles & Diffusers (Public Area) | 36d | 2012-09-22 | 2012-11-05 | T14PA09501C0, T14PA23021C0 |  |  |  |  | 14.34d | 0d | MECHANICAL [1498.8 h]; Cost |  |  | S08PA23019C0 | PT | C | 14 | PA | ME | 230 | 19 | FF | BILL 10 | B10 | S2 | FF | R00 | ACF07 | MEP | 230 |  |  |  |  |  |  |  |  |  |  |  |  |  |  |  |  |
| T14PA08709C0 |  | PT-14 ; Ironmongery (Public Area) | 33.25d | 2012-10-20 | 2012-12-01 | T14PA08107C0 |  |  |  |  | 51.84d | 37.5d | IRONMONGERY [1280 h]; IRONMONGERY [128 no]; Cost |  |  | S08PA08709C0 | PT | C | 14 | PA | DO | 087 | 09 |  | BILL 10 | B10 | S2 | IM | R00 | ACF06 |  | 087 | 322 | 951 | 08 |  |  |  |  |  |  |  |  |  |  |  |  |  |
| T14PA09701C0 |  | PT-14 ; Wall finishes (ST, WD, WC) (Public Area) | 36d | 2012-10-20 | 2012-12-05 | T14PA26011C0, T14PA27020C0, TVT0114211C0, TVT0214211C0, TVT0714211C0, TVT3114211C0, TVT3214255C0, TVT3314245C0, TAFCI22022R02 FS+170d, T14PA09501C0, T14PA09601C0, T14PA09602C0 |  |  |  |  | 25.09d | 0d | ASSORTED WALL FINISH [764 h]; ASSORTED WALL FINISH [878 m2]; Cost |  |  | S08PA09701C0 | PT | C | 14 | PA | WF | 097 | 01 |  | BILL 10 | B10 | S2 | 01 | R00 | ACF06 |  | 097 | 105 | 1002 |  |  |  |  |  |  |  |  |  |  |  |  |  |  |
| T14PA09702C0 |  | PT-14 ; Ceramic Wall Tiles (Public Area) | 7d | 2012-10-20 | 2012-10-30 | T14PA26011C0, T14PA27020C0, TVT0114211C0, TVT0214211C0, TVT0714211C0, TVT3114211C0, TVT3214255C0, TVT3314245C0, T14PA09501C0 |  |  |  |  | 78.09d | 63.75d | ASSORTED WALL FINISH [1049 h]; ASSORTED WALL FINISH [201 m2]; Cost |  |  | S08PA09701C0 | PT | C | 14 | PA | WF | 097 | 01 |  | BILL 10 | B10 | S2 | 04 | R00 | ACF06 |  | 097 | 105 | 1002 |  |  |  |  |  |  |  |  |  |  |  |  |  |  |
| T14PA01006C0 |  | PT-14 ; 2nd, Ceiling Inspection by Consultants (Public Area) | 4.5d | 2012-11-05 | 2012-11-10 | T14PA21115C0, T14PA23009C0, T14PA23015C0, T14PA27002C0, T14PA09501C0, T14PA21113C0, T14PA23019C0, T14PA26015C0, T14PA26017C0, T14PA26003C0, T14PA27030C0 |  |  |  |  | 14.34d | 0d | Labor General [0.6 h]; Cost |  |  | S08PA01006C0 | PT | C | 14 | PA | ME | 010 | 06 | 2n | BILL 10 | B10 | S2 | CI | R00 | ACF07 | MEP | 010 |  |  |  |  |  |  |  |  |  |  |  |  |  |  |  |  |
| T14PA09503C0 |  | PT-14 ; Ceiling closure - ACT/Gypsum (Public Area) | 24.25d | 2012-11-10 | 2012-12-10 | T14PA01006C0, T14PA21115C0, T14PA26005C0, T14PA27001C0, T14PA27002C0, TAFOA09513C1 FF, T14PA23021C0, T14PA26007C0 |  |  |  |  | 14.34d | 0d | ASSORTED CEILING FINISH [851.77 h]; CEILING GYPSUM [211.76 h]; ASSORTED CEILING FINISH [1385 m2]; CEILING GYPSUM [646 m2]; Cost |  |  | S08PA09503C0 | PT | C | 14 | PA | CE | 095 | 03 |  | BILL 10 | B10 | S2 | 02 | R00 | ACF06 |  | 095 | 324 | 953 |  |  |  |  |  |  |  |  |  |  |  |  |  | R3 |
| T14PA11001C0 |  | PT-14 ; Wall Protection (WP, CG, WG, FCG) (Public Area) | 24d | 2012-12-05 | 2013-01-03 | T14PA09701C0, T14PA09903C0 SS |  |  |  |  | 25.09d | 10.75d | FF&E [42 h]; Cost |  |  | S08PA11001C0 | PT | C | 14 | PA | WF | 110 | 01 |  | BILL 10 | B10 | S2 | 03 | R00 | ACF08 |  | b | 326 | 1001 |  |  |  |  |  |  |  |  |  |  |  |  |  |  |
| T14PA11009C0 |  | PT-14 ; Signage (Public Area) | 15d | 2012-12-05 | 2012-12-23 | T14PA09701C0 |  |  |  |  | 34.09d | 19.75d | SIGNAGES [173 h]; SIGNAGES [172.58 no]; Cost |  |  | S08PA11009C0 | PT | C | 14 | PA | SA | 110 | 09 |  | BILL 10 | B10 | S2 | 09 | R00 | ACF08 |  | c | 322 | 951 | 08 |  |  |  |  |  |  |  |  |  |  |  |  |  |

| ID | WBS | Activity | Duration | Start | Finish | Predecessors | Complete | Remaining | Planned start | Planned finish | Total float | Free float | Resources | Change Order # | NEW ACTIVITY ID | change id | CCAD BUILDING(SET) | CCAD PHASE(SET) | CCAD FLOOR(SET) | CCAD ZONE(SET) | CCAD WORK(SET) | CCAD SECTION(SET) | CCAD SERIAL No.(SET) | CCAD CBS(SET) | CCAD BILL(SET) | CCAD HANDOVER(SET) | CCAD TAG(SET) | CCAD REV(SET) | CCADACF (SET) | CCAD SSCF | CCAD SUB ZONE MEP(SET) | CCAD CSA | U% | Act Selector % | CCAD DIVISION(SET) | CCAD MEQ | IDDD |
| --- | --- | --- | --- | --- | --- | --- | --- | --- | --- | --- | --- | --- | --- | --- | --- | --- | --- | --- | --- | --- | --- | --- | --- | --- | --- | --- | --- | --- | --- | --- | --- | --- | --- | --- | --- | --- | --- |
| T14PA09907C0 |  | PT-14 ; Ceiling Final paint (Public Area) | 18d | 2012-12-10 | 2012-12-31 | T14PA09601C0, T14PA09905C0, T14PA09602C0, T14PA09503C0 |  |  |  |  | 26.34d | 12d | CEILING PAINT [29 h]; CEILING PAINT [36 m2]; Cost | 331 | 959 | S08PA09907C0 | PT | C | 14 | PA | PA | 099 | 07 | BILL 10 | B10 | S2 | 02 | R00 | ACF06 | 099 |  |  |  |  |  |  |  |
| T14PA26019C0 |  | PT-14 ; Final Fix, Inst of Switch/Sockets (Public Area) | 18d | 2012-12-10 | 2012-12-31 | T14PA09901C0, T14PA09503C0 |  |  |  |  | 14.34d | 0d | ELECTRICAL [362.4 h]; Cost |  |  | S08PA26019C0 | PT | C | 14 | PA | ME | 260 | 19 | BILL 10 | B10 | S2 | FF | R00 | ACF07 | 260 | FF | MEP |  |  |  |  |  |
|  | 10 | **Precommissioning Tesing & snagging (Public Area)** |  | 2012-12-31 | 2013-02-14 |  |  |  |  |  |  |  |  |  |  |  |  |  |  |  |  |  |  |  |  |  |  |  |  |  |  |  |  |  |  |  |  |
| T14TS01804C0 |  | PT-14 ; MEP de-snag, FIREM sign-off | 12d | 2012-12-31 | 2013-01-15 | T14PA26015C0, T14PA21113C0, T14PA23019C0, T14PA26017C0, T14PA26003C0, T14PA27030C0, T14PA26019C0 |  |  |  |  | 14.34d | 0d | TESTING & COMMISSIONING [510 h]; Cost |  |  | T14TS01801C0 | PT | C | 14 | TS | SC | 018 | 01 | BILL 10 | B10 | S2 | 01 | R00 | ACF07 | 018 |  |  |  |  |  |  |  |
| T14TS01807C0 |  | PT-14 ; Touch-up & Clean / JV inspection /CIR /De-snag | 17.88d | 2013-01-15 | 2013-02-06 | T14PA05501C0, T14PA08709C0, T14PA09601C0, T14PA09701C0, T14PA09903C0, T14PA09907C0, T14PA11001C0, T14PA11009C0, T14TS01804C0, T14PA09602C0, T14PA09702C0, T14PA09503C0 |  |  |  |  | 14.34d | 0d | TESTING & COMMISSIONING [128 h]; Cost |  |  | T14TS01802C0 | PT | C | 14 | TS | SC | 018 | 02 | BILL 10 | B10 | S2 | 02 | R00 | ACF07 | 018 |  |  |  |  |  |  |  |
| T14TS01810C0 |  | PT-14 ; Consultant's final de-snag inspection | 7d | 2013-02-06 | 2013-02-14 | T14TS01807C0 |  |  |  |  | 14.34d | 5.34d | Labor General [1 h]; Cost |  |  | T14TS01803C0 | PT | C | 14 | TS | SC | 018 | 03 | BILL 10 | B10 | S2 | 03 | R00 | ACF07 | 018 |  |  |  |  |  |  |  |
|  | 05 | **TR Room** |  | 2011-09-05 | 2012-10-25 |  |  |  |  |  |  |  |  |  |  |  |  |  |  |  |  |  |  |  |  |  |  |  |  |  |  |  |  |  |  |  |  |
| T14TR09201C0 |  | PT-14 ; Metal Studs (TR RM) | 18d | 2011-09-05 A | 2011-11-12 | T14PA09201C0 SS | 80% | 3.6d | 2011-11-01 | 2011-11-24 | 80.9d | 0d | PARTITIONS [231 h]; PARTITIONS - Metal Studs [32 m]; Cost | 313 | 885 | T14TR09201C0 | PT | C | 14 | TR | PT | 092 | 01 | BILL 10 | B10 | S2 | 1F | R00 | ACF06 | 092 |  | GP | 80 | PMS |  |  |  |
| T14TR09203C0 |  | PT-14 ; Partitions 1st face (TR RM) | 24d | 2011-09-05 A | 2011-11-27 | T14TR09201C0 | 50% | 12d | 2011-11-19 | 2011-12-18 | 110.9d | 79.44d | PARTITIONS [32 m]; PARTITIONS [177 h]; Cost | 314 | 886 | T14TR09203C0 | PT | C | 14 | TR | PT | 092 | 03 | BILL 10 | B10 | S2 | 2F | R00 | ACF06 | 092 |  | GP |  | P1F |  |  |  |
| T14TR26026C0 |  | PT-14 ; 2nd Fix, Conduit (TR RM) | 30d | 2011-11-12 | 2011-12-19 | T14TR09201C0 |  |  |  |  | 80.9d | 0d | ELECTRICAL [734.4 h]; Cost |  |  | T14TR26026C0 | PT | C | 14 | TR | ME | 260 | 26 | BILL 10 | B10 | S2 | 2F | R00 | ACF07 | 260 | 2n | MEP |  |  |  |  |  |
| T14TR01005C0 |  | PT-14 ; 2nd, Wall Inspection by Consultant (TR RM) | 12d | 2011-12-19 | 2012-01-03 | T14TR26026C0 |  |  |  |  | 80.9d | 49.44d | Labor General [0.6 h]; Cost |  |  | T14TR01005C0 | PT | C | 14 | TR | ME | 010 | 05 | BILL 10 | B10 | S2 | WI | R00 | ACF07 | 010 | 2n | MEP |  |  |  |  |  |
| T14TR08101C0 |  | PT-14 ; Door Frames (TR RM) | 18d | 2011-12-28 | 2012-01-18 | T14TR09201C0, GNHE08101C0 FS+126d |  |  |  |  | 97.5d | 66.04d | ASSORTED DOORS [19 h]; Cost | 316 | 20001090 | T14TR08101C0 | PT | C | 14 | TR | DO | 081 | 01 | BILL 10 | B10 | S2 | DF | R00 | ACF06 | 081 |  |  |  |  | 08 |  |  |
| T14TR09205C0 |  | PT-14 ; Partitions Closing (TR RM) | 30d | 2012-03-03 | 2012-04-07 | T14TR01005C0, T14TR09201C0, T14TR09203C0, TAFOA09214C1 FF, T14TR08101C0 FF, T14PA09205C0 SS |  |  |  |  | 31.46d | 0d | PARTITIONS [32 m]; PARTITIONS [235 h]; Cost | 315 | 887 | T14TR09205C0 | PT | C | 14 | TR | PT | 092 | 05 | BILL 10 | B10 | S2 | FF | R00 | ACF06 | 092 |  | GP |  | P2F |  |  |  |
| T14TR09901C0 |  | PT-14 ; Wall Prime & 1st coat (TR RM) | 18d | 2012-04-07 | 2012-04-28 | T14TR09205C0 |  |  |  |  | 31.46d | 0d | WALL PAINT [37 h]; WALL PAINT [45 m2]; Cost | 360 | 20001110 | T14TR09901C0 | PT | C | 14 | TR | PA | 099 | 01 | BILL 10 | B10 | S2 | 01 | R00 | ACF06 | 099 |  |  |  |  |  |  |  |
| T14TR23009C0 |  | PT-14 ; 2nd Fix, Inst of VAV'S CHW connection (TR RM) | 36d | 2012-04-07 | 2012-05-19 | T14TR09205C0 |  |  |  |  | 31.46d | 0d | MECHANICAL [1450.8 h]; Cost |  |  | T14TR23009C0 | PT | C | 14 | TR | ME | 230 | 09 | BILL 10 | B10 | S2 | 2F | R00 | ACF07 | 230 | 2n | MEP |  |  |  |  |  |
| T14TR23011C0 |  | PT-14 ; 2nd Fix, Inst of VCD's/FD's (TR RM) | 36d | 2012-04-07 | 2012-05-19 | T14TR09205C0 |  |  |  |  | 31.46d | 0d | MECHANICAL [1753.2 h]; Cost |  |  | T14TR23011C0 | PT | C | 14 | TR | ME | 230 | 11 | BILL 10 | B10 | S2 | 2F | R00 | ACF07 | 230 | 2n | MEP |  |  |  |  |  |
| T14TR26007C0 |  | PT-14 ; 2nd Fix, Cable Pulling (TR RM) | 36d | 2012-04-07 | 2012-05-19 | T14TR09203C0, T14TR09205C0 |  |  |  |  | 79.46d | 48d | ELECTRICAL [2683.2 h]; Cost |  |  | T14TR26007C0 | PT | C | 14 | TR | ME | 260 | 07 | BILL 10 | B10 | S2 | 2F | R00 | ACF07 | 260 | 2n | MEP |  |  |  |  |  |
| T14TR26009C0 |  | PT-14 ; 2nd Fix, Inst of Equipment (DB, TR, SG,BUS) (TR RM) | 54d | 2012-04-07 | 2012-06-09 | T14TR09205C0 |  |  |  |  | 43.46d | 0d | ELECTRICAL [3943.2 h]; Cost |  |  | T14TR26009C0 | PT | C | 14 | TR | ME | 260 | 09 | BILL 10 | B10 | S2 | 2F | R00 | ACF04 | 260 | 2n | MEP |  |  |  | E |  |
| T14TR26027C0 |  | PT-14 ; 2nd Fix, Wiring / Cabling (TR RM) | 30d | 2012-04-07 | 2012-05-12 | T14TR09203C0, T14TR09205C0 |  |  |  |  | 97.46d | 66d | ELECTRICAL [392.4 h]; Cost | 417 | 1318 | T14TR26027C0 | PT | C | 14 | TR | ME | 260 | 27 | BILL 10 | B10 | S2 | 2F | R00 | ACF07 | 260 | 2n | MEP |  |  |  |  |  |
| T14TR09501C0 |  | PT-14 ; Ceiling Grid and Service Tile (TR RM) | 24d | 2012-04-28 | 2012-05-26 | T14TR09205C0 SS+15d, T14TR09901C0 |  |  |  |  | 31.46d | 0d | CEILING GRID FOR GYPSUM [297.07 h]; CEILING GRID FOR GYPSUM [25.26 m2]; Cost | 336 | 1327 | T14TR09501C0 | PT | C | 14 | TR | CE | 095 | 01 | BILL 10 | B10 | S2 | 01 | R00 | ACF06 | 095 |  |  |  |  |  |  | 1 |
| T14TR09903C0 |  | PT-14 ; Wall - Final Paint (TR RM) | 12d | 2012-04-28 | 2012-05-12 | T14TR09901C0 |  |  |  |  | 138.71d | 107.25d | WALL PAINT [20 h]; WALL PAINT [24 m2]; Cost | 361 | 1312 | T14TR09903C0 | PT | C | 14 | TR | PA | 099 | 03 | BILL 10 | B10 | S2 | 02 | R00 | ACF06 | 099 |  |  |  |  |  |  |  |
| T14TR23013C0 |  | PT-14 ; 2nd Fix, Insulation of CHW pipe & Duct (TR RM) | 48d | 2012-05-19 | 2012-07-15 | T14TR23009C0, T14TR23011C0 |  |  |  |  | 31.46d | 0d | MECHANICAL [3064.8 h]; Cost |  |  | T14TR23013C0 | PT | C | 14 | TR | ME | 230 | 13 | BILL 10 | B10 | S2 | 2F | R00 | ACF07 | 230 | 2n | MEP |  |  |  |  |  |
| T14TR09601C0 |  | PT-14 ; Floor Finishes (TR RM) | 18d | 2012-05-26 | 2012-06-17 | T14TR09205C0, T14TR09501C0 |  |  |  |  | 31.46d | 0d | ASSORTED FLOOR FINISH [1248 h]; ASSORTED FLOOR FINISH [693 m2]; Cost | 359 | 20001120 | T14TR09601C0 | PT | C | 14 | TR | FF | 096 | 01 | BILL 10 | B10 | S2 | 01 | R00 | ACF06 | FF |  |  |  |  |  |  |  |
| T14TR09905C0 |  | PT-14 ; Ceiling Prime & 1st coat (TR RM) | 18d | 2012-05-26 | 2012-06-17 | T14TR09501C0 |  |  |  |  | 97.96d | 50d | CEILING PAINT [4 h]; CEILING PAINT [3 m2]; Cost | 362 | 1313 | T14TR09905C0 | PT | C | 14 | TR | PA | 099 | 05 | BILL 10 | B10 | S2 | 01 | R00 | ACF06 | 099 |  |  |  |  |  |  |  |
| T14TR23003C0 |  | PT-14 ; Final Fix, Inst of Grilles & Diffusers (TR RM) | 30d | 2012-05-26 | 2012-07-01 | T14TR09501C0 |  |  |  |  | 55.46d | 24d | MECHANICAL [1498.8 h]; Cost |  |  | T14TR23003C0 | PT | C | 14 | TR | ME | 230 | 03 | BILL 10 | B10 | S2 | FF | R00 | ACF07 | 230 | FF | MEP |  |  |  |  |  |
| T14TR23023C0 |  | PT-14 ; 2nd Fix, Flexible ducts (TR RM) | 30d | 2012-05-26 | 2012-07-01 | T14TR09205C0, T14TR09501C0 |  |  |  |  | 55.46d | 24d | MECHANICAL [30 h]; Cost | 412 | 20001140 | T14TR23023C0 | PT | C | 14 | TR | ME | 230 | 23 | BILL 10 | B10 | S2 | 2F | R00 | ACF07 | 230 | 2n | MEP |  |  |  |  |  |
| T14TR23074C0 |  | PT-14 ; Final Fix, Grilles, panels & diffusers (TR RM) | 30d | 2012-05-26 | 2012-07-01 | T14TR09501C0 |  |  |  |  | 55.46d | 24d | MECHANICAL [1498.8 h]; Cost | 419 | 20001160 | T14TR23074C0 | PT | C | 14 | TR | ME | 230 | 74 | BILL 10 | B10 | S2 | FF | R00 | ACF07 | 230 | FF | MEP |  |  |  |  |  |
| T14TR26005C0 |  | PT-14 ; 2nd Fix, Wiring for Power/Lighting/Emergency (TR RM) | 30d | 2012-05-26 | 2012-07-01 | T14TR09205C0, T14TR26026C0, T14TR09501C0 |  |  |  |  | 55.46d | 24d | ELECTRICAL [392.4 h]; Cost |  |  | T14TR26005C0 | PT | C | 14 | TR | ME | 260 | 05 | BILL 10 | B10 | S2 | 2F | R00 | ACF07 | 260 | 2n | MEP |  |  |  |  |  |
| T14TR26015C0 |  | PT-14 ; Final Fix, Inst of Ceiling rose (TR RM) | 30d | 2012-05-26 | 2012-07-01 | T14TR09501C0 |  |  |  |  | 55.46d | 24d | ELECTRICAL [61.2 h]; Cost |  |  | T14TR26015C0 | PT | C | 14 | TR | ME | 260 | 15 | BILL 10 | B10 | S2 | FF | R00 | ACF07 | 260 | FF | MEP |  |  |  |  |  |
| T14TR26019C0 |  | PT-14 ; Final Fix, Inst of Light fittings (TR RM) | 36d | 2012-05-26 | 2012-07-08 | T14TR09501C0 |  |  |  |  | 49.46d | 18d | ELECTRICAL [7815.6 h]; Cost |  |  | T14TR26019C0 | PT | C | 14 | TR | ME | 260 | 19 | BILL 10 | B10 | S2 | FF | R00 | ACF07 | 260 | FF | MEP |  |  |  |  |  |
| T14TR26076C0 |  | PT-14 ; Final Fix, Lighting fittings (TR RM) | 36d | 2012-05-26 | 2012-07-08 | T14TR09501C0 |  |  |  |  | 49.46d | 18d | ELECTRICAL [7815.6 h]; Cost | 420 | 20001170 | T14TR26076C0 | PT | C | 14 | TR | ME | 260 | 76 | BILL 10 | B10 | S2 | FF | R00 | ACF07 | 260 | FF | MEP |  |  |  |  |  |
| T14TR27002C0 |  | PT-14 ; 2nd Fix, Dressing of ELV panels (TR RM) | 30d | 2012-05-26 | 2012-07-01 | T14TR09205C0, T14TR27020C0 SS |  |  |  |  | 55.46d | 24d | ELECTRICAL [273.6 h]; Cost |  |  | T14TR27002C0 | PT | C | 14 | TR | ME | 270 | 02 | BILL 10 | B10 | S2 | 2F | R00 | ACF07 | 270 | 2n | MEP |  |  |  |  |  |
| T14TR27020C0 |  | PT-14 ; 2nd Fix, Inst of ELV Equipment (Panels) (TR RM) | 48d | 2012-05-26 | 2012-07-22 | T14TR09205C0, T14TR09501C0 |  |  |  |  | 55.46d | 0d | ELECTRICAL [1819.2 h]; Cost |  |  | T14TR27020C0 | PT | C | 14 | TR | ME | 270 | 20 | BILL 10 | B10 | S2 | 2F | R00 | ACF04 | 270 | 2n | MEP |  |  |  | E |  |
| T14TR27030C0 |  | PT-14 ; Final Fix, Inst of ELV device (Detector/Speaker) (TR RM) | 36d | 2012-05-26 | 2012-07-08 | T14TR09501C0 |  |  |  |  | 49.46d | 18d | ELECTRICAL [3571.2 h]; Cost |  |  | T14TR27030C0 | PT | C | 14 | TR | ME | 270 | 30 | BILL 10 | B10 | S2 | FF | R00 | ACF07 | 270 | FF | MEP |  |  |  |  |  |
| T14TR26013C0 |  | PT-14 ; Final Fix, Termination & Gladding of Cables (TR RM) | 30d | 2012-06-09 | 2012-07-15 | T14TR26009C0, T14TR09501C0 |  |  |  |  | 43.46d | 12d | ELECTRICAL [148.8 h]; Cost |  |  | T14TR26013C0 | PT | C | 14 | TR | ME | 260 | 13 | BILL 10 | B10 | S2 | FF | R00 | ACF07 | 260 | FF | MEP |  |  |  |  |  |
| T14TR08105C0 |  | PT-14 ; Doors (TR RM) | 18d | 2012-06-17 | 2012-07-08 | T14TR08101C0, T14TR09501C0, T14TR09601C0, T14TR09901C0 |  |  |  |  | 74.71d | 0d | ASSORTED DOORS [40 h]; ASSORTED DOORS [4 no]; Cost | 317 | 1325 | T14TR08105C0 | PT | C | 14 | TR | DO | 081 | 05 | BILL 10 | B10 | S2 | DR | R00 | ACF06 | 081 |  |  |  |  | 08 |  |  |
| T14TR21115C0 |  | PT-14 ; 2nd Fix, Gaseous Fire Suppression (TR RM) | 36d | 2012-06-17 | 2012-07-29 | T14TR09601C0 |  |  |  |  | 31.46d | 0d | MECHANICAL [2626.8 h]; Cost | 411 | 20001130 | T14TR21115C0 | PT | C | 14 | TR | ME | 211 | 15 | BILL 10 | B10 | S2 | 2F | R00 | ACF07 | 211 | 2n | MEP |  |  |  |  |  |
| T14TR08709C0 |  | PT-14 ; Ironmongery (TR RM) | 16d | 2012-07-08 | 2012-07-26 | T14TR08105C0 |  |  |  |  | 74.71d | 43.25d | IRONMONGERY [50 h]; IRONMONGERY [5 no]; Cost | 322 | 20001100 | T14TR08709C0 | PT | C | 14 | TR | DO | 087 | 09 | BILL 10 | B10 | S2 | IM | R00 | ACF06 | 087 |  |  |  |  | 08 |  |  |
| T14TR01006C0 |  | PT-14 ; 2nd, Ceiling Inspection by Consultants (TR RM) | 12d | 2012-07-15 | 2012-07-29 | T14TR23009C0, T14TR23011C0, T14TR23013C0, T14TR26007C0, T14TR09501C0 |  |  |  |  | 31.46d | 0d | Labor General [0.6 h]; Cost |  |  | T14TR01006C0 | PT | C | 14 | TR | ME | 010 | 06 | BILL 10 | B10 | S2 | CI | R00 | ACF07 | 010 | 2n | MEP |  |  |  |  |  |
| T14TR09503C0 |  | PT-14 ; Ceiling closure (TR RM) | 14d | 2012-07-29 | 2012-08-14 | T14TR01006C0, T14TR09501C0, T14TR21115C0, T14TR26005C0, T14TR26007C0, T14TR26026C0, T14TR26027C0, T14TR23074C0, T14TR23003C0, T14TR26076C0, T14TR26015C0, T14TR26013C0, T14TR26019C0, T14TR27030C0, T14TR27002C0, T14TR23023C0 |  |  |  |  | 31.46d | 0d | ASSORTED CEILING FINISH [33.21 h]; CEILING GYPSUM [8.2 h]; ASSORTED CEILING FINISH [54 m2]; CEILING GYPSUM [25 m2]; Cost | 337 | 20001080 | T14TR09503C0 | PT | C | 14 | TR | CE | 095 | 03 | BILL 10 | B10 | S2 | 02 | R00 | ACF06 | 095 |  |  |  |  |  |  |  |
| T14TR09907C0 |  | PT-14 ; Ceiling - Final paint (TR RM) | 10.75d | 2012-08-14 | 2012-08-28 | T14TR09905C0, T14TR09503C0 |  |  |  |  | 47.96d | 16.5d | CEILING PAINT [2 h]; CEILING PAINT [1 m2]; Cost | 363 | 1314 | T14TR09907C0 | PT | C | 14 | TR | PA | 099 | 07 | BILL 10 | B10 | S2 | 02 | R00 | ACF06 | 099 |  |  |  |  |  |  |  |
| T14TR26017C0 |  | PT-14 ; Final Fix, Inst of Switch/Sockets (TR RM) | 12d | 2012-08-14 | 2012-08-30 | T14TR09901C0, T14TR09503C0 |  |  |  |  | 31.46d | 0d | ELECTRICAL [362.4 h]; Cost |  |  | T14TR26017C0 | PT | C | 14 | TR | ME | 260 | 17 | BILL 10 | B10 | S2 | FF | R00 | ACF07 | 260 | FF | MEP |  |  |  |  |  |
| T14TR01802C0 |  | PT-14 ; MEP de-snag, FIREM sign-off | 15.25d | 2012-08-30 | 2012-09-17 | T14TR26017C0, T14TR23074C0, T14TR23003C0, T14TR26076C0, T14TR26013C0, T14TR26015C0, T14TR26019C0, T14TR27030C0 |  |  |  |  | 31.46d | 0d | TESTING & COMMISSIONING [510 h]; Cost |  |  | S05CO01851C0 | PT | C | 14 | TR | SC | 018 | 53 | BILL 10 | B10 | S2 | 01 | R00 | ACF07 | 018 |  |  |  |  |  |  |  |
| T14TR01801C0 |  | PT-14 ; Touch-up & Clean / JV inspection /CIR /De-snag | 21.25d | 2012-09-17 | 2012-10-11 | T14TR01802C0, T14TR08709C0, T14TR09601C0, T14TR09903C0, T14TR09907C0, T14TR09503C0 |  |  |  |  | 31.46d | 0d | TESTING & COMMISSIONING [128 h]; Cost | 396 |  | T14TR01851C0 | PT | C | 14 | TR | SC | 018 | 51 | BILL 10 | B10 | S2 | 02 | R00 | ACF07 | 018 |  |  |  |  |  |  |  |
| T14TR01803C0 |  | PT-14 ; Consultant's final de-snag inspection | 12d | 2012-10-11 | 2012-10-25 | T14TR01801C0 |  |  |  |  | 31.46d | 15.53d | Labor General [1 h]; Cost |  |  | CP3TS01803C0 | PT | C | 14 | TR | SC | 018 | 03 | BILL 10 | B10 | S1 | 03 | R00 | ACF07 | 018 |  |  |  |  |  |  |  |

| ID | WBS | Activity | Duration | Start | Finish | Predecessors | Complete | Remaining | Planned start | Planned finish | Total float | Free float | Resources | Cost | Actual cost | change id | RENZ % COMPLETE | Phase | CCAD BUILDING(SET) | CCAD PHASE(SET) | CCAD FLOOR(SET) | CCAD ZONE(SET) | CCAD WORK(SET) | CCAD SECTION(SET) | CCAD SERIAL No.(SET) | Area/ Department | Grids | Are | Weight & Nos | Process | Levels | CCAD CBS(SET) | CCAD BILL(SET) | CCAD HANDOVER(SET) | CCAD TAG(SET) | CCAD REV(SET) | CCADACF (SET) | CCAD SSCF | Claimed This Month | CCAD CSA | U% | P_811 | P_711 | CCAD SUB ZONE MEP(SET) | Act Selector % | Change Order # | NEW ACTIVITY ID | CCAD DIVISION(SET) | CCAD MEQ |
| --- | --- | --- | --- | --- | --- | --- | --- | --- | --- | --- | --- | --- | --- | --- | --- | --- | --- | --- | --- | --- | --- | --- | --- | --- | --- | --- | --- | --- | --- | --- | --- | --- | --- | --- | --- | --- | --- | --- | --- | --- | --- | --- | --- | --- | --- | --- | --- | --- | --- |
|  | 15 | **Level 15** |  | 2011-02-27 | 2013-02-06 |  |  |  |  |  |  |  |  |  |  |  |  |  |  |  |  |  |  |  |  |  |  |  |  |  |  |  |  |  |  |  |  |  |  |  |  |  |  |  |  |  |  |  |  |
|  | 01 | **Structure & Envelopment** |  | 2011-02-27 | 2012-04-15 |  |  |  |  |  |  |  |  |  |  |  |  |  |  |  |  |  |  |  |  |  |  |  |  |  |  |  |  |  |  |  |  |  |  |  |  |  |  |  |  |  |  |  |  |
| T15SA03301C0 |  | PT-15 ; Corewall Concrete (Zone SA) | 3d | 2011-02-27 A | 2011-03-02 A | T14SA03301C0 | 100% |  | 2011-03-20 | 2011-03-23 |  |  | CONCRETE [6280 h]; CONCRETE [158 m3]; Cost |  |  | T15SA03301C0 | 100 | Z2 | PT | C | 15 | SA | CT | 033 | 01 | PA | TRUS | D | A10 | EREC | 10FLR | BILL 10 | B10 | S2 | 04 | R00 | ACF03 | 033 |  |  |  |  |  |  |  |  |  |  |  |
| T15SB03303C0 |  | PT-15 ; Corewall Concrete (Zone SB) | 3d | 2011-03-14 A | 2011-03-17 A | T14SB03303C0 | 100% |  | 2011-03-13 | 2011-03-15 |  |  | CONCRETE [6280 h]; CONCRETE [158 m3]; Cost |  |  | T15SB03303C0 | 100 | Z2 | PT | C | 15 | SB | CT | 033 | 03 | PA | TRUS | D | A10 | EREC | 10FLR | BILL 10 | B10 | S2 | 04 | R00 | ACF03 | 033 |  |  |  |  |  |  |  |  |  |  |  |
| T15CO05101C0 |  | PT-15 ; Erection of Structural Steel of 15 th Floor (Common Zone) | 5d | 2011-05-25 A | 2011-06-12 A | T14CO05103C0, T15SA03301C0, T15SB03303C0 | 100% |  | 2011-07-06 | 2011-07-12 |  |  | STRUCTURAL STEEL [8045 h]; STRUCTURAL STEEL [263 T(Fe)]; Cost |  |  | T15CO05101C0 | 20 | Z2 | PT | C | 15 | CO | ST | 051 | 01 | PA | 10TH | E | A12A | EREC | 11FLR | BILL 10 | B10 | S2 | 01 | R00 | ACF03 | 051 | 3339499.27 | ST |  |  |  |  |  |  |  |  |  |
| T15CO05103C0 |  | PT-15 ; Alignment & welding of 15th Floor (Common Zone) | 3d | 2011-06-12 A | 2011-06-15 A | T15CO05101C0 | 100% |  |  |  |  |  | STRUCTURAL STEEL [1152 h]; Cost |  |  | T15CO05103C0 |  | Z2 | PT | C | 15 | CO | ST | 051 | 03 | PA | 10TH | E | A12A | EREC | 11FLR | BILL 10 | B10 | S2 | 02 | R00 | ACF03 | 051 | 463767.15 | ST |  |  |  |  |  |  |  |  |  |
| T15CO03399C0 |  | PT-15 ; Concrete on Metal Decking 15 FLR (Common Zone) | 10d | 2011-07-10 A | 2011-10-01 | T15CO05305C0 | 95% | 0.5d | 2011-07-14 | 2011-07-25 | 14.34d | 0d | CONCRETE [23776 h]; CONCRETE [598 m3]; Cost |  |  | T15CO05335C0 |  | Z2 | PT | C | 15 | CO | CT | 033 | 99 | PA | 10TH | E | A12A | MDEC | 11FLR | BILL 10 | B10 | S2 | 08 | R00 | ACF03 | 033 |  |  | 95 |  |  |  |  |  |  |  |  |
| T15CO05305C0 |  | PT-15 ; Metal Decking 15 FLR (Common Zone) | 12d | 2011-07-10 A | 2011-07-31 A | T15CO05103C0, T16CO05101C0 | 100% |  | 2011-06-30 | 2011-07-13 |  |  | METAL DECKING [2760 h]; METAL DECKING [3493 m2]; Cost |  |  | T15CO05305C0 |  | Z2 | PT | C | 15 | CO | ST | 053 | 05 | PA | 10TH | E | A12A | MDEC | 11FLR | BILL 10 | B10 | S2 | 03 | R00 | ACF03 | 053 |  | ST |  |  |  |  |  |  |  |  |  |
| T15CO07807C0 |  | PT-15 ; Cementitious Fire proofing Lvl 15 (Common Zone) | 12d | 2011-08-10 A | 2011-10-02 | T16CO03399C0 | 95% | 0.6d | 2011-08-11 | 2011-08-24 | 21.79d | 0d | CEMENTITIOUS FIREPROOFING [3066 h]; CEMENTITIOUS FIREPROOFING [6132 m2]; Cost |  |  | T15CO07807C0 |  | Z2 | PT | C | 15 | CO | ST | 078 | 07 | PA | 10TH | E | A12A | FIRE | 11FLR | BILL 10 | B10 | S2 | 04 | R00 | ACF03 | 078 |  | ST | 95 | 50 | 0 |  |  |  |  |  |  |
| T15CO04403C0 |  | PT-15 ; C2 Bracket (Common Zone) | 30d | 2011-09-05 A | 2011-12-17 | T15CO07807C0, T16CO03399C0 FS+21d, T12CO04407C0 | 12% | 26.4d | 2011-11-17 | 2011-12-25 | 15.65d | 0d | FACADE CURTAIN WALL 2 [522.3 h]; Cost |  |  | T15CO04403C0 |  |  | PT | C | 15 | CO | FA | 044 | 03 |  |  |  |  |  |  | BILL 10 | B10 | S2 | FC2 | R00 | ACF05 | 044 |  | FA |  |  |  |  |  |  |  |  |  |
| T15CO04405C0 |  | PT-15 ; C2 Transom & Mullion (Common Zone) | 30d | 2011-11-14 | 2011-12-21 | T15CO04403C0 SS+14d |  |  |  |  | 15.65d | 0d | FACADE CURTAIN WALL 2 [2088.7 h]; Cost |  |  | T15CO04405C0 |  |  | PT | C | 15 | CO | FA | 044 | 05 |  |  |  |  |  |  | BILL 10 | B10 | S2 | FC2 | R00 | ACF05 | 044 |  | FA |  |  |  |  |  |  |  |  |  |
| T15CO04407C0 |  | PT-15 ; C2 Glazing (Common Zone) | 30d | 2011-11-14 | 2011-12-21 | T15CO04405C0 SS, T15CO04405C0 FF |  |  |  |  | 15.65d | 0d | FACADE CURTAIN WALL 2 [4766.9 h]; FACADE CURTAIN WALL 2 [1742 m2]; FACADE TOTAL QUANTITY m2 [1742 m2]; Cost |  |  | T15CO04407C0 |  |  | PT | C | 15 | CO | FA | 044 | 07 |  |  |  |  |  |  | BILL 10 | B10 | S2 | FC2 | R00 | ACF05 | 044 |  | FA |  |  |  |  |  |  |  |  |  |
| T15CO04415C0 |  | PT-15 ; SG Catwalk Installation (Common Zone) | 52d | 2012-02-14 | 2012-04-15 | TEXCO04405C0 SS+14d, T14CO04415C0 SS |  |  |  |  | 50.02d | 14.9d | Labor General [4687.6 h]; Cost |  |  | I05CO04411C0 |  |  | PT | C | 15 | CO | FA | 044 | 11 |  |  |  |  |  |  | BILL 10 | B10 | S2 | SG | R00 | ACF05 | 044 |  | FA |  |  |  |  |  |  |  |  |  |
|  | 02 | **PAT RM-1** |  | 2011-08-02 | 2013-02-06 |  |  |  |  |  |  |  |  |  |  |  |  |  |  |  |  |  |  |  |  |  |  |  |  |  |  |  |  |  |  |  |  |  |  |  |  |  |  |  |  |  |  |  |  |
| T15P123001C0 |  | PT-15 ; 1st Fix, Inst. of Supports for MEP (PAT RM-1) | 53.88d | 2011-08-02 A | 2011-12-01 | T15CO07807C0 | 10% | 48.49d | 2011-08-25 | 2011-10-29 | 21.79d | 0d | MECHANICAL [4027.2 h]; Cost [45150.4 AED] | 45,150.38 | 4,515.04 | T15P123001C0 |  |  | PT | C | 15 | P1 | ME | 230 | 01 |  |  |  |  |  |  | BILL 10 | B10 | S2 | 1F | R00 | ACF04 | 230 |  | MEP |  | 10 | 0 | 1S | M1F |  |  |  |  |
| T15P109201C0 |  | PT-15 ; Metal Studs (PAT RM-1) | 42d | 2011-09-05 A | 2011-12-21 | T15P123001C0 SS, T15CO04407C0 FF, T15CO04405C0 FF, T15P123001C0 FF | 10% | 37.8d | 2011-11-20 | 2012-01-11 | 73.9d | 0d | PARTITIONS [3551 h]; PARTITIONS - Metal Studs [493 m]; Cost |  |  | T15P109201C0 |  |  | PT | C | 15 | P1 | PT | 092 | 01 |  |  |  |  |  |  | BILL 10 | B10 | S2 | 1F | R00 | ACF06 | 092 |  | GP |  |  |  |  | PMS | 313 | 944 |  |  |
| T15P126001C0 |  | PT-15 ; 1st Fix, Inst of Trunking/Conduiting (PAT RM-1) | 48d | 2011-12-01 | 2012-01-29 | T15CO07807C0, T15P123001C0 |  |  |  |  | 21.79d | 0d | ELECTRICAL [734.4 h]; Cost |  |  | T15P126001C0 |  |  | PT | C | 15 | P1 | ME | 260 | 01 |  |  |  |  |  |  | BILL 10 | B10 | S2 | 1F | R00 | ACF04 | 260 |  | MEP |  |  |  | 1S | M1F |  |  |  |  |
| T15P109702C0 |  | PT-15 ; Installation of Bathroom Pods (PAT RM-1) | 0d | 2011-12-11 | 2011-12-11 | T14P109702C0, T14P209702C0, T15CO07807C0, AAFCI09201R02 FS+118d |  |  |  |  | 158.88d | 0d | Cost |  |  | T10P109701C0 |  |  | PT | C | 15 | P1 | BP | 097 | 01 |  |  |  |  |  |  | BILL 10 | B10 | S2 | FG | R00 | ACF06 | 097 |  |  |  |  |  |  |  | 105 | 1002 |  |  |
| T15P127010C0 |  | PT-15 ; 1st Fix, Inst of Trunking for ELV system (PAT RM-1) | 48d | 2011-12-17 | 2012-02-13 | T15CO07807C0, T15P123001C0, T15P126001C0 SS+12d |  |  |  |  | 21.79d | 0d | ELECTRICAL [1512 h]; Cost |  |  | T15P127010C0 |  |  | PT | C | 15 | P1 | ME | 270 | 10 |  |  |  |  |  |  | BILL 10 | B10 | S2 | 1F | R00 | ACF04 | 270 |  | MEP |  |  |  | 1S | M1F |  |  |  |  |
| T15P105503C0 |  | PT-15 ; Ceiling Support for medical equipment (PAT RM-1) | 24d | 2011-12-21 | 2012-01-19 | T15P109201C0, TAFCI22011R20 FS+72d |  |  |  |  | 81.78d | 59.99d | SECONDARY STEEL [62 h]; STRUCTURAL STEEL [28 T(Fe)]; Cost |  |  | D03EY05503C0 |  |  | PT | C | 15 | P1 | SW | 055 | 03 |  |  |  |  |  |  | BILL 10 | B10 | S2 | 03 | R00 | ACF03 | b |  |  |  |  |  |  |  | 335 | 962 |  |  |
| T15P109203C0 |  | PT-15 ; Partitions 1st face (PAT RM-1) | 45d | 2011-12-21 | 2012-02-14 | T15P109201C0 |  |  |  |  | 76.9d | 45.99d | PARTITIONS [493 m]; PARTITIONS [2772 h]; Cost |  |  | T15P109203C0 |  |  | PT | C | 15 | P1 | PT | 092 | 03 |  |  |  |  |  |  | BILL 10 | B10 | S2 | 2F | R00 | ACF06 | 092 |  | GP |  |  |  |  | P1F | 314 | 945 |  |  |
| T15P122011C0 |  | PT-15 ; 2nd Fix, Drainage/Water pipe (wall) (PAT RM-1) | 42d | 2011-12-21 | 2012-02-11 | T15P109201C0 |  |  |  |  | 73.9d | 42.99d | PLUMBING [1378.8 h]; Cost |  |  | T15P122011C0 |  |  | PT | C | 15 | P1 | ME | 220 | 11 |  |  |  |  |  |  | BILL 10 | B10 | S2 | 2F | R00 | ACF07 | 220 |  | MEP |  |  |  | 2n |  |  |  |  |  |
| T15P126009C0 |  | PT-15 ; 2nd Fix, Inst of Wall conduites (PAT RM-1) | 42d | 2011-12-21 | 2012-02-11 | T15P109201C0 |  |  |  |  | 73.9d | 42.99d | ELECTRICAL [734.4 h]; Cost |  |  | T15P126009C0 |  |  | PT | C | 15 | P1 | ME | 260 | 09 |  |  |  |  |  |  | BILL 10 | B10 | S2 | 2F | R00 | ACF07 | 260 |  | MEP |  |  |  | 2n |  |  |  |  |  |
| T15P126013C0 |  | PT-15 ; 1st Fix, Inst of Cable Tray (PAT RM-1) | 48d | 2011-12-28 | 2012-02-25 | T15CO07807C0, T15P123001C0, T15P127010C0 SS+10d |  |  |  |  | 21.79d | 0d | ELECTRICAL [399.6 h]; Cost |  |  | T15P126013C0 |  |  | PT | C | 15 | P1 | ME | 260 | 13 |  |  |  |  |  |  | BILL 10 | B10 | S2 | 1F | R00 | ACF04 | 260 |  | MEP |  |  |  | 1S | M1F |  |  |  |  |
| T15P122019C0 |  | PT-15 ; 1st Fix, Inst of Drainage pipe (ceiling) (PAT RM-1) | 48d | 2012-01-09 | 2012-03-06 | T15P123001C0, T15P126013C0 SS+9d |  |  |  |  | 21.79d | 0d | PLUMBING [1378.8 h]; Cost |  |  | T15P122019C0 |  |  | PT | C | 15 | P1 | ME | 220 | 19 |  |  |  |  |  |  | BILL 10 | B10 | S2 | 1F | R00 | ACF04 | 220 |  | MEP |  |  |  | 1S | M1F |  |  |  |  |
| T15P105511C0 |  | PT-15 ; Wall reinforcement for MEP/Medical (PAT RM-1) | 24d | 2012-01-14 | 2012-02-11 | T15P109201C0, TAFCI22011R02 FS+72d |  |  |  |  | 79.5d | 48.59d | SECONDARY STEEL [26 h]; Cost |  |  | T15P105511C0 |  |  | PT | C | 15 | P1 | SW | 055 | 11 |  |  |  |  |  |  | BILL 10 | B10 | S2 | 03 | R00 | ACF03 | b |  |  |  |  |  |  |  |  |  |  |  |
| T15P122005C0 |  | PT-15 ; 1st Fix, Inst of Water supply pipe (ceiling) (PAT RM-1) | 60d | 2012-01-21 | 2012-04-01 | T15P122019C0 SS+10d, T15P123001C0 |  |  |  |  | 21.79d | 0d | PLUMBING [4548 h]; Cost |  |  | T15P122005C0 |  |  | PT | C | 15 | P1 | ME | 220 | 05 |  |  |  |  |  |  | BILL 10 | B10 | S2 | 1F | R00 | ACF04 | 220 |  | MEP |  |  |  | 1S | M1F |  |  |  |  |
| T15P108103C0 |  | PT-15 ; Door Frames (PAT RM-1) | 36d | 2012-01-23 | 2012-03-05 | T15P109201C0, GNHE08101C0 FS+126d, T14PA08103C0 SS+3d |  |  |  |  | 68.12d | 0d | ASSORTED DOORS [303 h]; Cost |  |  | T15P108103C0 |  |  | PT | C | 15 | P1 | DO | 081 | 03 |  |  |  |  |  |  | BILL 10 | B10 | S2 | DF | R00 | ACF06 | 081 |  |  |  |  |  |  |  | 316 | 947 | 08 |  |
| T15P121111C0 |  | PT-15 ; 1st Fix, Inst of Sprinkler main pipe (PAT RM-1) | 48d | 2012-01-31 | 2012-03-28 | T15P122005C0 SS+9d, T15P123001C0 |  |  |  |  | 21.79d | 0d | MECHANICAL [1236 h]; Cost |  |  | T15P121111C0 |  |  | PT | C | 15 | P1 | ME | 211 | 11 |  |  |  |  |  |  | BILL 10 | B10 | S2 | 1F | R00 | ACF04 | 211 |  | MEP |  |  |  | 1S | M1F |  |  |  |  |
| T15P122007C0 |  | PT-15 ; 1st Fix, Inst of Medical Gas pipe (PAT RM-1) | 48d | 2012-02-12 | 2012-04-08 | T15P121111C0 SS+9d, T15P123001C0 |  |  |  |  | 30.91d | 0d | PLUMBING [1149.6 h]; Cost |  |  | T15P122007C0 |  |  | PT | C | 15 | P1 | ME | 220 | 07 |  |  |  |  |  |  | BILL 10 | B10 | S2 | 1F | R00 | ACF04 | 220 |  | MEP |  |  |  | 1S | M1F |  |  |  |  |
| T15P122015C0 |  | PT-15 ; 2nd Fix, Medical Gas pipe (PAT RM-1) | 42d | 2012-02-12 | 2012-04-01 | T15P109201C0, T15P122007C0 SS |  |  |  |  | 30.91d | 0d | PLUMBING [1149.6 h]; Cost |  |  | T15P122015C0 |  |  | PT | C | 15 | P1 | ME | 220 | 15 |  |  |  |  |  |  | BILL 10 | B10 | S2 | 2F | R00 | ACF07 | 220 |  | MEP |  |  |  | 2n |  |  |  |  |  |
| T15P123017C0 |  | PT-15 ; 1st Fix, Inst of CHW pipe (PAT RM-1) | 54d | 2012-02-18 | 2012-04-21 | T15P121111C0 SS+14d, T15P123001C0, T15P105503C0 FF+18d |  |  |  |  | 21.79d | 0d | MECHANICAL [2467.2 h]; Cost |  |  | T15P123017C0 |  |  | PT | C | 15 | P1 | ME | 230 | 17 |  |  |  |  |  |  | BILL 10 | B10 | S2 | 1F | R00 | ACF04 | 230 |  | MEP |  |  |  | 1S | M1F |  |  |  |  |
| T15P127001C0 |  | PT-15 ; 1st Fix, Wiring/ Cabling work (PAT RM-1) | 48d | 2012-02-25 | 2012-04-21 | T15P126001C0, T15P126013C0, T15P127010C0 |  |  |  |  | 85.79d | 64d | ELECTRICAL [392.4 h]; Cost |  |  | T15P127001C0 |  |  | PT | C | 15 | P1 | ME | 270 | 01 |  |  |  |  |  |  | BILL 10 | B10 | S2 | 1F | R00 | ACF04 | 270 |  | MEP |  |  |  | 1S | M1F |  |  |  |  |
| T15P123023C0 |  | PT-15 ; 1st Fix, Inst of Main Ducting (PAT RM-1) | 60d | 2012-02-29 | 2012-05-09 | T15P123001C0, T15P123017C0 SS+10d |  |  |  |  | 21.79d | 0d | MECHANICAL [8022 h]; Cost |  |  | T15P123023C0 |  |  | PT | C | 15 | P1 | ME | 230 | 23 |  |  |  |  |  |  | BILL 10 | B10 | S2 | 1F | R00 | ACF04 | 230 |  | MEP |  |  |  | 1S | M1F |  |  |  |  |
| T15P121117C0 |  | PT-15 ; 1st Fix, Inst of Sprinkler branch pipe (PAT RM-1) | 48d | 2012-03-28 | 2012-05-23 | T15P109201C0, T15P121111C0, T15P105503C0 FF+18d |  |  |  |  | 57.79d | 36d | MECHANICAL [561.6 h]; Cost |  |  | T15P121117C0 |  |  | PT | C | 15 | P1 | ME | 211 | 17 |  |  |  |  |  |  | BILL 10 | B10 | S2 | 1F | R00 | ACF04 | 211 |  | MEP |  |  |  | 1S | M1F |  |  |  |  |
| T15P101005C0 |  | PT-15 ; 2nd, Wall Inspection by Consultant (PAT RM-1) | 6d | 2012-04-01 | 2012-04-08 | T15P122011C0, T15P122015C0, T15P126009C0 |  |  |  |  | 30.91d | 0d | Labor General [0.6 h]; Cost |  |  | T15P101005C0 |  |  | PT | C | 15 | P1 | ME | 010 | 05 |  |  |  |  |  |  | BILL 10 | B10 | S2 | WI | R00 | ACF07 | 010 |  | MEP |  |  |  | 2n |  |  |  |  |  |
| T15P109205C0 |  | PT-15 ; Partitions Closing (PAT RM-1) | 35.88d | 2012-04-08 | 2012-05-20 | T15P101005C0, T15P105511C0, T15P109203C0, T15P122005C0, T15P122019C0, TAFOA09214C1 FF, T15P109702C0 FF, T15P108103C0 FF |  |  |  |  | 30.91d | 0d | PARTITIONS [493 m]; PARTITIONS [3563 h]; Cost |  |  | T15P109205C0 |  |  | PT | C | 15 | P1 | PT | 092 | 05 |  |  |  |  |  |  | BILL 10 | B10 | S2 | FF | R00 | ACF06 | 092 |  | GP |  |  |  |  | P2F | 315 | 946 |  |  |
| T15P123009C0 |  | PT-15 ; 2nd Fix, Inst of VAV'S CHW connection (PAT RM-1) | 42d | 2012-04-21 | 2012-06-09 | T15P123017C0 |  |  |  |  | 43.79d | 22d | MECHANICAL [1450.8 h]; Cost |  |  | T15P123009C0 |  |  | PT | C | 15 | P1 | ME | 230 | 09 |  |  |  |  |  |  | BILL 10 | B10 | S2 | 2F | R00 | ACF07 | 230 |  | MEP |  |  |  | 2n |  |  |  |  |  |
| T15P123008C0 |  | PT-15 ; 1st Fix, Inst of VCD's/FD's (PAT RM-1) | 48d | 2012-05-09 | 2012-07-05 | T15P123023C0, T15P105503C0 FF+18d |  |  |  |  | 21.79d | 0d | MECHANICAL [1753.2 h]; Cost |  |  | T15P123008C0 |  |  | PT | C | 15 | P1 | ME | 230 | 08 |  |  |  |  |  |  | BILL 10 | B10 | S2 | 1F | R00 | ACF04 | 230 |  | MEP |  |  |  | 1S | M1F |  |  |  |  |
| T15P123015C0 |  | PT-15 ; 2nd Fix, Insulation of CHW pipe & Duct (PAT RM-1) | 48d | 2012-05-09 | 2012-07-05 | T15P123017C0, T15P123023C0 |  |  |  |  | 21.79d | 0d | MECHANICAL [3064.8 h]; Cost |  |  | T15P123015C0 |  |  | PT | C | 15 | P1 | ME | 230 | 15 |  |  |  |  |  |  | BILL 10 | B10 | S2 | 2F | R00 | ACF07 | 230 |  | MEP |  |  |  | 2n |  |  |  |  |  |
| T15P107103C0 |  | PT-15 ; Waterproofing (PAT RM-1) | 11.88d | 2012-05-20 | 2012-06-03 | T15P108103C0, T15P109205C0 |  |  |  |  | 110.79d | 47.25d | THERMAL & MOISTURE [504 h]; THERMAL & MOISTURE [3326 m2]; Cost |  |  | T15P107103C0 |  |  | PT | C | 15 | P1 | FF | 071 | 03 |  |  |  |  |  |  | BILL 10 | B10 | S2 | 01 | R00 | ACF03 | 071 |  |  |  |  |  |  |  | 105 | 999 |  |  |
| T15P109901C0 |  | PT-15 ; Wall Prime & 1st coat (PAT RM-1) | 30d | 2012-05-20 | 2012-06-25 | T15P109205C0 |  |  |  |  | 30.91d | 0d | WALL PAINT [587 h]; WALL PAINT [731 m2]; Cost |  |  | T15P109901C0 |  |  | PT | C | 15 | P1 | PA | 099 | 01 |  |  |  |  |  |  | BILL 10 | B10 | S2 | 01 | R00 | ACF06 | 099 |  |  |  |  |  |  |  | 328 | 956 |  |  |
| T15P126005C0 |  | PT-15 ; 2nd Fix, Wiring for Power/Lighting/Emergency (PAT RM-1) | 42d | 2012-05-20 | 2012-07-09 | T15P109205C0 |  |  |  |  | 76.41d | 0d | ELECTRICAL [392.4 h]; Cost |  |  | T15P126005C0 |  |  | PT | C | 15 | P1 | ME | 260 | 05 |  |  |  |  |  |  | BILL 10 | B10 | S2 | 2F | R00 | ACF07 | 260 |  | MEP |  |  |  | 2n |  |  |  |  |  |
| T15P126007C0 |  | PT-15 ; 2nd Fix, Cable Pulling (PAT RM-1) | 48d | 2012-05-20 | 2012-07-16 | T15P109201C0 SS+6d, T15P109205C0 |  |  |  |  | 110.91d | 89.12d | ELECTRICAL [2683.2 h]; Cost |  |  | T15P126007C0 |  |  | PT | C | 15 | P1 | ME | 260 | 07 |  |  |  |  |  |  | BILL 10 | B10 | S2 | 2F | R00 | ACF07 | 260 |  | MEP |  |  |  | 2n |  |  |  |  |  |
| T15P126011C0 |  | PT-15 ; 2nd Fix, Inst of Equipment (DB) (PAT RM-1) | 54d | 2012-05-20 | 2012-07-23 | T15P109205C0 |  |  |  |  | 98.66d | 47.12d | ELECTRICAL [878.4 h]; Cost |  |  | T15P126011C0 |  |  | PT | C | 15 | P1 | ME | 260 | 11 |  |  |  |  |  |  | BILL 10 | B10 | S2 | 2F | R00 | ACF04 | 260 |  | MEP |  |  |  | 2n |  |  |  |  | E |
| T15P126053C0 |  | PT-15 ; 2nd Fix, Wiring / Cabling (PAT RM-1) | 42d | 2012-05-20 | 2012-07-09 | T15P109203C0, T15P109205C0 |  |  |  |  | 38.91d | 17.12d | ELECTRICAL [392.4 h]; Cost |  |  | T15P126053C0 |  |  | PT | C | 15 | P1 | ME | 260 | 53 |  |  |  |  |  |  | BILL 10 | B10 | S2 | 2F | R00 | ACF07 | 260 |  | MEP |  |  |  | 2n |  | 389 | 977 |  |  |
| T15P105501C0 |  | PT-15 ; Handrails & balustrade (PAT RM-1) | 30.5d | 2012-06-25 | 2012-07-30 | T15P109901C0 |  |  |  |  | 50.41d | 28.62d | SECONDARY STEEL [230 h]; Cost |  |  | T15P105501C0 |  |  | PT | C | 15 | P1 | SW | 055 | 01 |  |  |  |  |  |  | BILL 10 | B10 | S2 | 01 | R00 | ACF03 | a |  |  |  |  |  |  |  |  |  |  |  |
| T15P109501C0 |  | PT-15 ; Ceiling Grid and Service Tile (PAT RM-1) | 20d | 2012-07-05 | 2012-07-29 | T15P105503C0, T15P109205C0 SS+15d, T15P121117C0, T15P123008C0, T15P123009C0, T15P123015C0, T15P127001C0, T15P126053C0 FF, T15P109901C0 |  |  |  |  | 21.79d | 0d | CEILING GRID FOR GYPSUM [4870 h]; CEILING GRID FOR GYPSUM [416.8 m2]; Cost |  |  | T15P109501C0 |  |  | PT | C | 15 | P1 | CE | 095 | 01 |  |  |  |  |  |  | BILL 10 | B10 | S2 | 01 | R00 | ACF06 | 095 |  |  |  |  |  |  |  | 323 | 952 |  |  |
| T15P109510C0 |  | PT-15 ; Patient Lift Ceiling Rail (by others) (PAT RM-1) | 30d | 2012-07-05 | 2012-08-09 | T15P109501C0 SS |  |  |  |  | 89.79d | 68d | Labor General [0.1 h]; Cost |  |  | I06P109501C0 |  |  | PT | C | 15 | P1 | CE | 095 | 10 |  |  |  |  |  |  | BILL 10 | B10 | S2 | 02 | R00 | ACF06 | 095 |  |  |  |  |  |  |  | 323 | 952 |  |  |
| T15P126015C0 |  | PT-15 ; Final Fix, Termination & Gladding of Cables (PAT RM-1) | 36d | 2012-07-09 | 2012-08-22 | T15P126005C0 |  |  |  |  | 76.41d | 45.12d | ELECTRICAL [148.8 h]; Cost |  |  | T15P126015C0 |  |  | PT | C | 15 | P1 | ME | 260 | 15 |  |  |  |  |  |  | BILL 10 | B10 | S2 | FF | R00 | ACF07 | 260 |  | MEP |  |  |  | FF |  |  |  |  |  |
| T15P123021C0 |  | PT-15 ; 2nd Fix, Inst of Flexible Duct & Plenum boxes (PAT RM-1) | 42d | 2012-07-12 | 2012-09-02 | T15P109205C0, T15P109501C0 SS+6d |  |  |  |  | 31.29d | 0d | MECHANICAL [30 h]; Cost |  |  | T15P123021C0 |  |  | PT | C | 15 | P1 | ME | 230 | 21 |  |  |  |  |  |  | BILL 10 | B10 | S2 | 2F | R00 | ACF07 | 230 |  | MEP |  |  |  | 2n |  |  |  |  |  |
| T15P109305C0 |  | PT-15 ; Flooring (Terrazzo) (PAT RM-1) | 30d | 2012-07-29 | 2012-09-04 | T15P107103C0, T15P109501C0 |  |  |  |  | 63.54d | 0d | TERRAZO FLOOR [1427 m2]; TERRAZO FLOOR [2568 h]; Cost |  |  | T15P109305C0 |  |  | PT | C | 15 | P1 | FF | 096 | 05 |  |  |  |  |  |  | BILL 10 | B10 | S2 | 07 | R00 | ACF06 | TZ |  |  |  |  |  |  |  | 106 | 1000 |  |  |
| T15P109601C0 |  | PT-15 ; Flooring (Rubber & etc) (PAT RM-1) | 30d | 2012-07-29 | 2012-09-04 | T15P109501C0, T15P105501C0 FF |  |  |  |  | 21.79d | 0d | RUBBER FLOOR [32 h]; RUBBER FLOOR [77 m2]; Cost |  |  | T15P109601C0 |  |  | PT | C | 15 | P1 | FF | 096 | 01 |  |  |  |  |  |  | BILL 10 | B10 | S2 | 03 | R00 | ACF06 | RF |  |  |  |  |  |  |  | 326 | 955 |  |  |
| T15P109905C0 |  | PT-15 ; Ceiling Prime & 1st coat (PAT RM-1) | 30d | 2012-07-29 | 2012-09-04 | T15P109501C0 |  |  |  |  | 93.54d | 0d | CEILING PAINT [36 h]; CEILING PAINT [43 m2]; Cost |  |  | T15P109905C0 |  |  | PT | C | 15 | P1 | PA | 099 | 05 |  |  |  |  |  |  | BILL 10 | B10 | S2 | 01 | R00 | ACF06 | 099 |  |  |  |  |  |  |  | 330 | 958 |  |  |
| T15P121115C0 |  | PT-15 ; 2nd Fix, Inst of Sprinkler droppers (PAT RM-1) | 42d | 2012-07-29 | 2012-09-18 | T15P109501C0 |  |  |  |  | 53.29d | 0d | MECHANICAL [1602 h]; Cost |  |  | T15P121115C0 |  |  | PT | C | 15 | P1 | ME | 211 | 15 |  |  |  |  |  |  | BILL 10 | B10 | S2 | 2F | R00 | ACF07 | 211 |  | MEP |  |  |  | 2n |  |  |  |  |  |
| T15P126017C0 |  | PT-15 ; Final Fix, Inst of Ceiling rose (PAT RM-1) | 36d | 2012-07-29 | 2012-09-11 | T15P109501C0 |  |  |  |  | 41.29d | 0d | ELECTRICAL [61.2 h]; Cost |  |  | T15P126017C0 |  |  | PT | C | 15 | P1 | ME | 260 | 17 |  |  |  |  |  |  | BILL 10 | B10 | S2 | FF | R00 | ACF07 | 260 |  | MEP |  |  |  | FF |  |  |  |  |  |
| T15P127002C0 |  | PT-15 ; 2nd Fix, Wiring Droppers (PAT RM-1) | 42d | 2012-07-29 | 2012-09-18 | T15P109501C0 |  |  |  |  | 47.29d | 0d | ELECTRICAL [392.4 h]; Cost |  |  | T15P127002C0 |  |  | PT | C | 15 | P1 | ME | 270 | 02 |  |  |  |  |  |  | BILL 10 | B10 | S2 | 2F | R00 | ACF07 | 270 |  | MEP |  |  |  | 2n |  |  |  |  |  |
| T15P127020C0 |  | PT-15 ; 2nd Fix, Inst of ELV Equipment (Panels) (PAT RM-1) | 42d | 2012-07-29 | 2012-09-18 | T15P109205C0, T15P109501C0 |  |  |  |  | 51.54d | 0d | ELECTRICAL [1819.2 h]; Cost |  |  | T15P127020C0 |  |  | PT | C | 15 | P1 | ME | 270 | 20 |  |  |  |  |  |  | BILL 10 | B10 | S2 | 2F | R00 | ACF04 | 270 |  | MEP |  |  |  | 2n |  |  |  |  | E |
| T15P140303C0 |  | PT-15 ; Final Fix, Pneumatic Station (PAT RM-1) | 36d | 2012-07-29 | 2012-09-11 | T15P109501C0 |  |  |  |  | 105.54d | 83.75d | MECHANICAL [2974.8 h]; Cost |  |  | T15P140303C0 |  |  | PT | C | 15 | P1 | ME | 403 | 03 |  |  |  |  |  |  | BILL 10 | B10 | S2 | FF | R00 | ACF07 | 403 |  | MEP |  |  |  | FF |  |  |  |  |  |
| T15P121113C0 |  | PT-15 ; Final Fix, Inst of Sprinklers head/ Extinguisher (PAT RM-1) | 36d | 2012-08-05 | 2012-09-18 | T15P109501C0, T15P121115C0 SS+6d |  |  |  |  | 53.29d | 22d | MECHANICAL [234 h]; Cost |  |  | T15P121113C0 |  |  | PT | C | 15 | P1 | ME | 211 | 13 |  |  |  |  |  |  | BILL 10 | B10 | S2 | FF | R00 | ACF07 | 211 |  | MEP |  |  |  | FF |  |  |  |  |  |
| T15P126003C0 |  | PT-15 ; Final Fix, Inst of Light fittings (PAT RM-1) | 48d | 2012-08-05 | 2012-10-02 | T15P109501C0, T15P126017C0 SS+6d |  |  |  |  | 41.29d | 10d | ELECTRICAL [7815.6 h]; Cost |  |  | T15P126003C0 |  |  | PT | C | 15 | P1 | ME | 260 | 03 |  |  |  |  |  |  | BILL 10 | B10 | S2 | FF | R00 | ACF07 | 260 |  | MEP |  |  |  | FF |  |  |  |  |  |
| T15P127030C0 |  | PT-15 ; Final Fix, Inst of ELV device (Detector/Speaker) (PAT RM-1) | 42d | 2012-08-05 | 2012-09-25 | T15P109501C0, T15P127002C0 SS+6d |  |  |  |  | 47.29d | 16d | ELECTRICAL [3571.2 h]; Cost |  |  | T15P127030C0 |  |  | PT | C | 15 | P1 | ME | 270 | 30 |  |  |  |  |  |  | BILL 10 | B10 | S2 | FF | R00 | ACF07 | 270 |  | MEP |  |  |  | FF |  |  |  |  |  |
| T15P123019C0 |  | PT-15 ; Final Fix, Inst of Grilles & Diffusers (PAT RM-1) | 36d | 2012-09-02 | 2012-10-14 | T15P109501C0, T15P123021C0 |  |  |  |  | 31.29d | 0d | MECHANICAL [1498.8 h]; Cost |  |  | T15P123019C0 |  |  | PT | C | 15 | P1 | ME | 230 | 19 |  |  |  |  |  |  | BILL 10 | B10 | S2 | FF | R00 | ACF07 | 230 |  | MEP |  |  |  | FF |  |  |  |  |  |
| T15P106101C0 |  | PT-15 ; Wood / caseworks (PAT RM-1) | 48d | 2012-09-04 | 2012-11-01 | T15CO04407C0, T15P109501C0, T15P109601C0, T15P109901C0, TAFWA00101M0 |  |  |  |  | 21.79d | 0d | WOOD WORK/CASEWORK [873.9 no]; WOOD WORK/CASEWORK [1915 h]; Cost |  |  | T15P106101C0 |  |  | PT | C | 15 | P1 | WO | 061 | 01 |  |  |  |  |  |  | BILL 10 | B10 | S2 | WW | R00 | ACF06 | 061 |  |  |  |  |  |  |  | 332 | 960 |  |  |
| T15P106102C0 |  | PT-15 ; Head/Foot Wall (PAT RM-1) | 54d | 2012-09-04 | 2012-11-08 | T15CO04407C0, T15P109501C0, TAFWA00101M0, T15P106101C0 SS |  |  |  |  | 39.54d | 0d | WOOD WORK/CASEWORK [1649 h]; Cost |  |  | T15P106102C0 |  |  | PT | C | 15 | P1 | WO | 061 | 02 |  |  |  |  |  |  | BILL 10 | B10 | S2 | WW | R00 | ACF06 | 061 |  |  |  |  |  |  |  | 332 | 960 |  |  |
| T15P108107C0 |  | PT-15 ; Doors (PAT RM-1) | 36d | 2012-09-04 | 2012-10-16 | T15P108103C0, T15P109501C0, T15P109601C0, T15P109901C0 |  |  |  |  | 55.41d | 0d | ASSORTED DOORS [610 h]; ASSORTED DOORS [61 no]; Cost |  |  | T15P108107C0 |  |  | PT | C | 15 | P1 | DO | 081 | 07 |  |  |  |  |  |  | BILL 10 | B10 | S2 | DR | R00 | ACF06 | 081 |  |  |  |  |  |  |  | 317 | 948 | 08 |  |
| T15P109903C0 |  | PT-15 ; Wall Final Paint (PAT RM-1) | 30d | 2012-09-04 | 2012-10-09 | T15P109901C0, T15P109905C0, T15P109501C0 |  |  |  |  | 93.54d | 48d | WALL PAINT [316 h]; WALL PAINT [394 m2]; Cost |  |  | T15P109903C0 |  |  | PT | C | 15 | P1 | PA | 099 | 03 |  |  |  |  |  |  | BILL 10 | B10 | S2 | 02 | R00 | ACF06 | 099 |  |  |  |  |  |  |  | 329 | 957 |  |  |
| T15P122025C0 |  | PT-15 ; Final Fix, Inst of Sanitary Ware (PAT RM-1) | 42d | 2012-09-04 | 2012-10-23 | T15P109205C0, T15P109305C0 |  |  |  |  | 63.54d | 0d | PLUMBING [3690 h]; Cost |  |  | T15P122025C0 |  |  | PT | C | 15 | P1 | ME | 220 | 25 |  |  |  |  |  |  | BILL 10 | B10 | S2 | FF | R00 | ACF07 | 220 |  | MEP |  |  |  | FF |  |  |  |  |  |
| T15P122021C0 |  | PT-15 ; Final Fix, Terminate Sanitary Ware & Appliances (PAT RM-1) | 42d | 2012-09-11 | 2012-11-01 | T15P122011C0, T15P122025C0 SS+6d |  |  |  |  | 63.54d | 41.75d | PLUMBING [3361.2 h]; Cost |  |  | T15P122021C0 |  |  | PT | C | 15 | P1 | ME | 220 | 21 |  |  |  |  |  |  | BILL 10 | B10 | S2 | FF | R00 | ACF07 | 220 |  | MEP |  |  |  | FF |  |  |  |  |  |
| T15P109701C0 |  | PT-15 ; Wall finishes (ST, WD, WC) (PAT RM-1) | 36d | 2012-09-18 | 2012-11-01 | T15P126011C0, T15P127020C0, T15P109501C0, T15P109601C0, T15P109305C0 |  |  |  |  | 51.54d | 0d | ASSORTED WALL FINISH [519 h]; ASSORTED WALL FINISH [595 m2]; Cost |  |  | T15P109701C0 |  |  | PT | C | 15 | P1 | WF | 097 | 01 |  |  |  |  |  |  | BILL 10 | B10 | S2 | 01 | R00 | ACF06 | 097 |  |  |  |  |  |  |  | 105 | 1002 |  |  |

| ID | WBS | Activity | Duration | Start | Finish | Predecessors | Complete | Remaining | Planned start | Planned finish | Total float | Free float | Resources | Cost | Actual cost | change id | CCAD BUILDING(SET) | CCAD PHASE(SET) | CCAD FLOOR(SET) | CCAD ZONE(SET) | CCAD WORK(SET) | CCAD SECTION(SET) | CCAD SERIAL No.(SET) | CCAD SUB ZONE MEP(SET) | CCAD CBS(SET) | CCAD BILL(SET) | CCAD HANDOVER(SET) | CCAD TAG(SET) | CCAD REV(SET) | CCADACF (SET) | CCAD CSA | CCAD SSCF | Change Order # | NEW ACTIVITY ID | CCAD DIVISION(SET) | user_number8 | user_integer1 | user_integer2 | user_number7 | P_811 | P_711 | U% | Act Selector % | CCAD MEQ |
| --- | --- | --- | --- | --- | --- | --- | --- | --- | --- | --- | --- | --- | --- | --- | --- | --- | --- | --- | --- | --- | --- | --- | --- | --- | --- | --- | --- | --- | --- | --- | --- | --- | --- | --- | --- | --- | --- | --- | --- | --- | --- | --- | --- | --- |
| T15P101006C0 |  | PT-15 ; 2nd, Ceiling Inspection by Consultants (PAT RM-1) | 4.5d | 2012-10-14 | 2012-10-20 | T15P121115C0, T15P123009C0, T15P123015C0, T15P127002C0, T15P109501C0, T15P121113C0, T15P123019C0, T15P126015C0, T15P126017C0, T15P126003C0, T15P127030C0 |  |  |  |  | 31.29d | 9.5d | Labor General [0.6 h]; Cost |  |  | T15P101006C0 | PT | C | 15 | P1 | ME | 010 | 06 | 2n | BILL 10 | B10 | S2 | CI | R00 | ACF07 | MEP | 010 |  |  |  |  |  |  |  |  |  |  |  |  |
| T15P108709C0 |  | PT-15 ; Ironmongery (PAT RM-1) | 32.12d | 2012-10-16 | 2012-11-26 | T15P108107C0 |  |  |  |  | 55.41d | 33.62d | IRONMONGERY [870 h]; IRONMONGERY [87 no]; Cost |  |  | T15P108709C0 | PT | C | 15 | P1 | DO | 087 | 09 |  | BILL 10 | B10 | S2 | IM | R00 | ACF06 |  | 087 | 322 | 951 | 08 |  |  |  |  |  |  |  |  |  |
| T15P109503C0 |  | PT-15 ; Ceiling closure - ACT/Gypsum (PAT RM-1) | 23.75d | 2012-11-01 | 2012-12-01 | T15P101006C0, T15P109510C0, T15P121115C0, T15P126005C0, T15P127001C0, T15P127002C0, TAFOA09513C1 FF, T15P106101C0, T15P123021C0, T15P126007C0 |  |  |  |  | 21.79d | 0d | ASSORTED CEILING FINISH [549.81 h]; CEILING GYPSUM [136.74 h]; ASSORTED CEILING FINISH [894 m2]; CEILING GYPSUM [417 m2]; Cost |  |  | T15P109503C0 | PT | C | 15 | P1 | CE | 095 | 03 |  | BILL 10 | B10 | S2 | 02 | R00 | ACF06 |  | 095 | 324 | 953 |  |  |  |  |  |  |  |  |  |  |
| T15P111001C0 |  | PT-15 ; Wall Protection (WP, CG, WG, FCG) (PAT RM-1) | 24d | 2012-11-01 | 2012-12-01 | T15P109701C0, T15P109903C0 SS |  |  |  |  | 51.54d | 29.75d | FF&E [27 h]; Cost |  |  | T15P111001C0 | PT | C | 15 | P1 | WF | 110 | 01 |  | BILL 10 | B10 | S2 | 03 | R00 | ACF08 |  | b | 326 | 1001 |  |  |  |  |  |  |  |  |  |  |
| T15P122029C0 |  | PT-15 ; Final Fix, Medical Gas pipe (PAT RM-1) | 18d | 2012-11-08 | 2012-12-01 | T15P109501C0, T15P106102C0 |  |  |  |  | 39.54d | 17.75d | PLUMBING [1149.6 h]; Cost |  |  | T15P122029C0 | PT | C | 15 | P1 | ME | 220 | 29 | FF | BILL 10 | B10 | S2 | FF | R00 | ACF07 | MEP | 220 |  |  |  |  |  |  |  |  |  |  |  |  |
| T15P109675C1 |  | PT-15, Carpet Tile Finish (Patient Room-1) | 0d | 2012-12-01 | 2012-12-01 | T15P109903C0 SS, T15P109907C0 SS |  |  |  |  | 51.79d | 30d | Cost |  |  |  | PT | C | 15 | P1 | FF | 096 |  |  |  | B10 |  |  | R00 | ACF06 | CPT | CPT |  |  |  |  |  |  |  |  |  |  |  |  |
| T15P109907C0 |  | PT-15 ; Ceiling Final paint (PAT RM-1) | 18d | 2012-12-01 | 2012-12-23 | T15P109601C0, T15P109905C0, T15P109503C0 |  |  |  |  | 33.79d | 0d | CEILING PAINT [20 h]; CEILING PAINT [23 m2]; Cost |  |  | T15P109907C0 | PT | C | 15 | P1 | PA | 099 | 07 |  | BILL 10 | B10 | S2 | 02 | R00 | ACF06 |  | 099 | 331 | 959 |  |  |  |  |  |  |  |  |  |  |
| T15P111003C0 |  | PT-15 ; FF & E (PAT RM-1) | 18d | 2012-12-01 | 2012-12-23 | T15P109601C0, T15P106101C0, T15P109503C0 |  |  |  |  | 33.79d | 12d | FF&E [1067 h]; Cost |  |  | T15P111003C0 | PT | C | 15 | P1 | WO | 110 | 03 |  | BILL 10 | B10 | S2 | 04 | R00 | ACF08 |  | a | 333 | 961 |  |  |  |  |  |  |  |  |  |  |
| T15P122027C0 |  | PT-15 ; Final Fix, Inst of All drain (PAT RM-1) | 18d | 2012-12-01 | 2012-12-23 | T15P109305C0, T15P109503C0 |  |  |  |  | 21.79d | 0d | PLUMBING [1378.8 h]; Cost |  |  | T15P122027C0 | PT | C | 15 | P1 | ME | 220 | 27 | FF | BILL 10 | B10 | S2 | FF | R00 | ACF07 | MEP | 220 |  |  |  |  |  |  |  |  |  |  |  |  |
| T15P126019C0 |  | PT-15 ; Final Fix, Inst of Switch/Sockets (PAT RM-1) | 18d | 2012-12-01 | 2012-12-23 | T15P109901C0, T15P109503C0 |  |  |  |  | 21.79d | 0d | ELECTRICAL [362.4 h]; Cost |  |  | T15P126019C0 | PT | C | 15 | P1 | ME | 260 | 19 | FF | BILL 10 | B10 | S2 | FF | R00 | ACF07 | MEP | 260 |  |  |  |  |  |  |  |  |  |  |  |  |
|  | 10 | **Precommissioning Tesing & snagging (PAT RM-1)** |  | 2012-12-23 | 2013-02-06 |  |  |  |  |  |  |  |  |  |  |  |  |  |  |  |  |  |  |  |  |  |  |  |  |  |  |  |  |  |  |  |  |  |  |  |  |  |  |  |
| T15TS01804C0 |  | PT-15 ; MEP de-snag, FIREM sign-off | 12d | 2012-12-23 | 2013-01-07 | T15P122025C0, T15P122027C0, T15P126015C0, T15P122021C0, T15P121113C0, T15P123019C0, T15P140303C0, T15P122029C0, T15P126017C0, T15P126003C0, T15P127030C0, T15P126019C0 |  |  |  |  | 21.79d | 0d | TESTING & COMMISSIONING [510 h]; Cost |  |  | T15TS01801C0 | PT | C | 15 | TS | SC | 018 | 01 |  | BILL 10 | B10 | S2 | 01 | R00 | ACF07 |  | 018 |  |  |  |  |  |  |  |  |  |  |  |  |
| T15TS01807C0 |  | PT-15 ; Touch-up & Clean / JV inspection /CIR /De-snag | 18d | 2013-01-07 | 2013-01-29 | T15P105501C0, T15P106101C0, T15P106102C0, T15P107103C0, T15P108709C0, T15P109305C0, T15P109601C0, T15P109701C0, T15P109903C0, T15P109907C0, T15P111001C0, T15P111003C0, T15TS01804C0, T15P109503C0, T15P109675C1, T15P209685C1 |  |  |  |  | 21.79d | 0d | TESTING & COMMISSIONING [128 h]; Cost |  |  | T15TS01802C0 | PT | C | 15 | TS | SC | 018 | 02 |  | BILL 10 | B10 | S2 | 02 | R00 | ACF07 |  | 018 |  |  |  |  |  |  |  |  |  |  |  |  |
| T15TS01810C0 |  | PT-15 ; Consultant's final de-snag inspection | 6.88d | 2013-01-29 | 2013-02-06 | T15TS01807C0 |  |  |  |  | 21.79d | 12.79d | Labor General [1 h]; Cost |  |  | T15TS01803C0 | PT | C | 15 | TS | SC | 018 | 03 |  | BILL 10 | B10 | S2 | 03 | R00 | ACF07 |  | 018 |  |  |  |  |  |  |  |  |  |  |  |  |
|  | 03 | **PAT RM-2** |  | 2011-08-02 | 2013-01-23 |  |  |  |  |  |  |  |  |  |  |  |  |  |  |  |  |  |  |  |  |  |  |  |  |  |  |  |  |  |  |  |  |  |  |  |  |  |  |  |
| T15P223001C0 |  | PT-15 ; 1st Fix, Inst. of Supports for MEP (PAT RM-2) | 53.88d | 2011-08-02 A | 2011-11-24 | T15CO07807C0 | 20% | 43.1d | 2011-08-25 | 2011-10-29 | 32.68d | 0d | MECHANICAL [800.4 h]; Cost [45150.4 AED] | 45,150.38 | 9,030.08 | T15P223001C0 | PT | C | 15 | P2 | ME | 230 | 01 | 1S | BILL 10 | B10 | S2 | 1F | R00 | ACF04 | MEP | 230 |  |  |  | 0 | 0 | 0 | 0 | 10 | 0 | 20 | M1F |  |
| T15P209201C0 |  | PT-15 ; Metal Studs (PAT RM-2) | 42d | 2011-09-05 A | 2011-12-21 | T15P223001C0 SS, T15CO04407C0 FF, T15CO04405C0 FF, T15P223001C0 FF | 20% | 33.6d | 2011-11-20 | 2012-01-11 | 65.4d | 0d | PARTITIONS [2367 h]; PARTITIONS - Metal Studs [328 m]; Cost |  |  | T15P209201C0 | PT | C | 15 | P2 | PT | 092 | 01 |  | BILL 10 | B10 | S2 | 1F | R00 | ACF06 | GP | 092 | 313 | 944 |  |  |  |  |  |  |  | 20 | PMS |  |
| T15P227010C0 |  | PT-15 ; 1st Fix, Inst of Trunking for ELV system (PAT RM-2) | 48d | 2011-09-05 A | 2012-01-30 | T15CO07807C0, T15P223001C0, T15P226001C0 SS+9d | 5% | 45.6d | 2011-11-19 | 2012-01-17 | 32.68d | 0d | ELECTRICAL [1512 h]; Cost [79240.1 AED] | 79,240.08 | 3,962 | T15P227010C0 | PT | C | 15 | P2 | ME | 270 | 10 | 1S | BILL 10 | B10 | S2 | 1F | R00 | ACF04 | MEP | 270 |  |  |  |  |  |  |  |  |  |  | M1F |  |
| T15P226001C0 |  | PT-15 ; 1st Fix, Inst of Trunking/Conduiting (PAT RM-2) | 48d | 2011-11-24 | 2012-01-23 | T15CO07807C0, T15P223001C0 |  |  |  |  | 32.68d | 0d | ELECTRICAL [734.4 h]; Cost |  |  | T15P226001C0 | PT | C | 15 | P2 | ME | 260 | 01 | 1S | BILL 10 | B10 | S2 | 1F | R00 | ACF04 | MEP | 260 |  |  |  |  |  |  |  |  |  |  | M1F |  |
| T15P226013C0 |  | PT-15 ; 1st Fix, Inst of Cable Tray (PAT RM-2) | 48d | 2011-12-07 | 2012-02-02 | T15CO07807C0, T15P223001C0, T15P227010C0 SS+9d |  |  |  |  | 32.68d | 0d | ELECTRICAL [399.6 h]; Cost |  |  | T15P226013C0 | PT | C | 15 | P2 | ME | 260 | 13 | 1S | BILL 10 | B10 | S2 | 1F | R00 | ACF04 | MEP | 260 |  |  |  |  |  |  |  |  |  |  | M1F |  |
| T15P209702C0 |  | PT-15 ; Installation of Bathroom Pods (PAT RM-2) | 0d | 2011-12-11 | 2011-12-11 | T15P109702C0 SS, T15CO07807C0, AAFCI09201R02 FS+118d |  |  |  |  | 158.88d | 0d | Cost |  |  | T10P109701C0 | PT | C | 15 | P2 | BP | 097 | 01 |  | BILL 10 | B10 | S2 | FG | R00 | ACF06 |  | 097 | 105 | 1002 |  |  |  |  |  |  |  |  |  |  |
| T15P222019C0 |  | PT-15 ; 1st Fix, Inst of Drainage pipe (ceiling) (PAT RM-2) | 48d | 2011-12-18 | 2012-02-14 | T15P223001C0, T15P226013C0 SS+9d |  |  |  |  | 32.68d | 0d | PLUMBING [1378.8 h]; Cost |  |  | T15P222019C0 | PT | C | 15 | P2 | ME | 220 | 19 | 1S | BILL 10 | B10 | S2 | 1F | R00 | ACF04 | MEP | 220 |  |  |  |  |  |  |  |  |  |  | M1F |  |
| T15P205503C0 |  | PT-15 ; Ceiling Support for medical equipment (PAT RM-2) | 24d | 2011-12-21 | 2012-01-19 | T15P209201C0, TAFCI22011R20 FS+72d |  |  |  |  | 73.28d | 40.6d | SECONDARY STEEL [72 h]; STRUCTURAL STEEL [29 T(Fe)]; Cost |  |  | D03EY05503C0 | PT | C | 15 | P2 | SW | 055 | 03 |  | BILL 10 | B10 | S2 | 03 | R00 | ACF03 |  | b | 335 | 962 |  |  |  |  |  |  |  |  |  |  |
| T15P209203C0 |  | PT-15 ; Partitions 1st face (PAT RM-2) | 45d | 2011-12-21 | 2012-02-14 | T15P209201C0 |  |  |  |  | 68.4d | 26.6d | PARTITIONS [328 m]; PARTITIONS [1854 h]; Cost |  |  | T15P209203C0 | PT | C | 15 | P2 | PT | 092 | 03 |  | BILL 10 | B10 | S2 | 2F | R00 | ACF06 | GP | 092 | 314 | 945 |  |  |  |  |  |  |  |  | P1F |  |
| T15P222011C0 |  | PT-15 ; 2nd Fix, Drainage/Water pipe (wall) (PAT RM-2) | 42d | 2011-12-21 | 2012-02-11 | T15P209201C0 |  |  |  |  | 65.4d | 23.6d | PLUMBING [1378.8 h]; Cost |  |  | T15P222011C0 | PT | C | 15 | P2 | ME | 220 | 11 | 2n | BILL 10 | B10 | S2 | 2F | R00 | ACF07 | MEP | 220 |  |  |  |  |  |  |  |  |  |  |  |  |
| T15P226009C0 |  | PT-15 ; 2nd Fix, Inst of Wall conduites (PAT RM-2) | 42d | 2011-12-21 | 2012-02-11 | T15P209201C0 |  |  |  |  | 65.4d | 23.6d | ELECTRICAL [734.4 h]; Cost |  |  | T15P226009C0 | PT | C | 15 | P2 | ME | 260 | 09 | 2n | BILL 10 | B10 | S2 | 2F | R00 | ACF07 | MEP | 260 |  |  |  |  |  |  |  |  |  |  |  |  |
| T15P222005C0 |  | PT-15 ; 1st Fix, Inst of Water supply pipe (ceiling) (PAT RM-2) | 60d | 2011-12-28 | 2012-03-10 | T15P222019C0 SS+9d, T15P223001C0 |  |  |  |  | 32.68d | 0d | PLUMBING [4548 h]; Cost |  |  | T15P222005C0 | PT | C | 15 | P2 | ME | 220 | 05 | 1S | BILL 10 | B10 | S2 | 1F | R00 | ACF04 | MEP | 220 |  |  |  |  |  |  |  |  |  |  | M1F |  |
| T15P221111C0 |  | PT-15 ; 1st Fix, Inst of Sprinkler main pipe (PAT RM-2) | 48d | 2012-01-09 | 2012-03-06 | T15P222005C0 SS+9d, T15P223001C0 |  |  |  |  | 32.68d | 0d | MECHANICAL [853.2 h]; Cost |  |  | T15P221111C0 | PT | C | 15 | P2 | ME | 211 | 11 | 1S | BILL 10 | B10 | S2 | 1F | R00 | ACF04 | MEP | 211 |  |  |  |  |  |  |  |  |  |  | M1F |  |
| T15P205511C0 |  | PT-15 ; Wall reinforcement for MEP/Medical (PAT RM-2) | 24d | 2012-01-14 | 2012-02-11 | T15P209201C0, TAFCI22011R02 FS+72d |  |  |  |  | 71d | 29.2d | SECONDARY STEEL [31 h]; Cost |  |  | T15P205511C0 | PT | C | 15 | P2 | SW | 055 | 11 |  | BILL 10 | B10 | S2 | 03 | R00 | ACF03 |  | b |  |  |  |  |  |  |  |  |  |  |  |  |
| T15P222007C0 |  | PT-15 ; 1st Fix, Inst of Medical Gas pipe (PAT RM-2) | 48d | 2012-01-19 | 2012-03-17 | T15P221111C0 SS+9d, T15P223001C0 |  |  |  |  | 41.8d | 0d | PLUMBING [1149.6 h]; Cost |  |  | T15P222007C0 | PT | C | 15 | P2 | ME | 220 | 07 | 1S | BILL 10 | B10 | S2 | 1F | R00 | ACF04 | MEP | 220 |  |  |  |  |  |  |  |  |  |  | M1F |  |
| T15P222015C0 |  | PT-15 ; 2nd Fix, Medical Gas pipe (PAT RM-2) | 42d | 2012-01-19 | 2012-03-10 | T15P209201C0, T15P222007C0 SS |  |  |  |  | 41.8d | 0d | PLUMBING [1149.6 h]; Cost |  |  | T15P222015C0 | PT | C | 15 | P2 | ME | 220 | 15 | 2n | BILL 10 | B10 | S2 | 2F | R00 | ACF07 | MEP | 220 |  |  |  |  |  |  |  |  |  |  |  |  |
| T15P223017C0 |  | PT-15 ; 1st Fix, Inst of CHW pipe (PAT RM-2) | 54d | 2012-01-25 | 2012-03-29 | T15P221111C0 SS+14d, T15P223001C0, T15P205503C0 FF+18d |  |  |  |  | 32.68d | 0d | MECHANICAL [2467.2 h]; Cost |  |  | T15P223017C0 | PT | C | 15 | P2 | ME | 230 | 17 | 1S | BILL 10 | B10 | S2 | 1F | R00 | ACF04 | MEP | 230 |  |  |  |  |  |  |  |  |  |  | M1F |  |
| T15P208103C0 |  | PT-15 ; Door Frames (PAT RM-2) | 36d | 2012-01-26 | 2012-03-08 | T15P209201C0, GNHE08101C0 FS+126d, T15P108103C0 SS+3d |  |  |  |  | 68.12d | 0d | ASSORTED DOORS [215 h]; Cost |  |  | T15P208103C0 | PT | C | 15 | P2 | DO | 081 | 03 |  | BILL 10 | B10 | S2 | DF | R00 | ACF06 |  | 081 | 316 | 947 | 08 |  |  |  |  |  |  |  |  |  |
| T15P227001C0 |  | PT-15 ; 1st Fix, Wiring/ Cabling work (PAT RM-2) | 48d | 2012-02-02 | 2012-03-31 | T15P226001C0, T15P226013C0, T15P227010C0 |  |  |  |  | 95.68d | 63d | ELECTRICAL [392.4 h]; Cost |  |  | T15P227001C0 | PT | C | 15 | P2 | ME | 270 | 01 | 1S | BILL 10 | B10 | S2 | 1F | R00 | ACF04 | MEP | 270 |  |  |  |  |  |  |  |  |  |  | M1F |  |
| T15P223023C0 |  | PT-15 ; 1st Fix, Inst of Main Ducting (PAT RM-2) | 60d | 2012-02-07 | 2012-04-17 | T15P223001C0, T15P223017C0 SS+10d |  |  |  |  | 32.68d | 0d | MECHANICAL [8022 h]; Cost |  |  | T15P223023C0 | PT | C | 15 | P2 | ME | 230 | 23 | 1S | BILL 10 | B10 | S2 | 1F | R00 | ACF04 | MEP | 230 |  |  |  |  |  |  |  |  |  |  | M1F |  |
| T15P221117C0 |  | PT-15 ; 1st Fix, Inst of Sprinkler branch pipe (PAT RM-2) | 48d | 2012-03-06 | 2012-05-01 | T15P209201C0, T15P221111C0, T15P205503C0 FF+18d |  |  |  |  | 68.68d | 36d | MECHANICAL [561.6 h]; Cost |  |  | T15P221117C0 | PT | C | 15 | P2 | ME | 211 | 17 | 1S | BILL 10 | B10 | S2 | 1F | R00 | ACF04 | MEP | 211 |  |  |  |  |  |  |  |  |  |  | M1F |  |
| T15P201005C0 |  | PT-15 ; 2nd, Wall Inspection by Consultant (PAT RM-2) | 6d | 2012-03-10 | 2012-03-17 | T15P222011C0, T15P222015C0, T15P226009C0 |  |  |  |  | 41.8d | 0d | Labor General [0.6 h]; Cost |  |  | T15P201005C0 | PT | C | 15 | P2 | ME | 010 | 05 | 2n | BILL 10 | B10 | S2 | WI | R00 | ACF07 | MEP | 010 |  |  |  |  |  |  |  |  |  |  |  |  |
| T15P209205C0 |  | PT-15 ; Partitions Closing (PAT RM-2) | 35.88d | 2012-03-17 | 2012-04-28 | T15P201005C0, T15P205511C0, T15P209203C0, T15P222005C0, T15P222019C0, TAFOA09214C1 FF, T15P209702C0 FF, T15P208103C0 SS |  |  |  |  | 41.8d | 0d | PARTITIONS [328 m]; PARTITIONS [2369 h]; Cost |  |  | T15P209205C0 | PT | C | 15 | P2 | PT | 092 | 05 |  | BILL 10 | B10 | S2 | FF | R00 | ACF06 | GP | 092 | 315 | 946 |  |  |  |  |  |  |  |  | P2F |  |
| T15P223009C0 |  | PT-15 ; 2nd Fix, Inst of VAV'S CHW connection (PAT RM-2) | 42d | 2012-03-29 | 2012-05-17 | T15P223017C0 |  |  |  |  | 54.68d | 22d | MECHANICAL [1450.8 h]; Cost |  |  | T15P223009C0 | PT | C | 15 | P2 | ME | 230 | 09 | 2n | BILL 10 | B10 | S2 | 2F | R00 | ACF07 | MEP | 230 |  |  |  |  |  |  |  |  |  |  |  |  |
| T15P223008C0 |  | PT-15 ; 1st Fix, Inst of VCD's/FD's (PAT RM-2) | 48d | 2012-04-17 | 2012-06-12 | T15P223023C0, T15P205503C0 FF+18d |  |  |  |  | 32.68d | 0d | MECHANICAL [1753.2 h]; Cost |  |  | T15P223008C0 | PT | C | 15 | P2 | ME | 230 | 08 | 1S | BILL 10 | B10 | S2 | 1F | R00 | ACF04 | MEP | 230 |  |  |  |  |  |  |  |  |  |  | M1F |  |
| T15P223015C0 |  | PT-15 ; 2nd Fix, Insulation of CHW pipe & Duct (PAT RM-2) | 48d | 2012-04-17 | 2012-06-12 | T15P223017C0, T15P223023C0 |  |  |  |  | 32.68d | 0d | MECHANICAL [3064.8 h]; Cost |  |  | T15P223015C0 | PT | C | 15 | P2 | ME | 230 | 15 | 2n | BILL 10 | B10 | S2 | 2F | R00 | ACF07 | MEP | 230 |  |  |  |  |  |  |  |  |  |  |  |  |
| T15P207103C0 |  | PT-15 ; Waterproofing (PAT RM-2) | 11.88d | 2012-04-28 | 2012-05-10 | T15P208103C0, T15P209205C0 |  |  |  |  | 130.18d | 51.25d | THERMAL & MOISTURE [384 h]; THERMAL & MOISTURE [2509 m2]; Cost |  |  | T15P207103C0 | PT | C | 15 | P2 | FF | 071 | 03 |  | BILL 10 | B10 | S2 | 01 | R00 | ACF03 |  | 071 | 105 | 999 |  |  |  |  |  |  |  |  |  |  |
| T15P209901C0 |  | PT-15 ; Wall Prime & 1st coat (PAT RM-2) | 30d | 2012-04-28 | 2012-06-02 | T15P209205C0 |  |  |  |  | 41.8d | 0d | WALL PAINT [415 h]; WALL PAINT [517 m2]; Cost |  |  | T15P209901C0 | PT | C | 15 | P2 | PA | 099 | 01 |  | BILL 10 | B10 | S2 | 01 | R00 | ACF06 |  | 099 | 328 | 956 |  |  |  |  |  |  |  |  |  |  |
| T15P226005C0 |  | PT-15 ; 2nd Fix, Wiring for Power/Lighting/Emergency (PAT RM-2) | 42d | 2012-04-28 | 2012-06-17 | T15P209205C0 |  |  |  |  | 95.8d | 0d | ELECTRICAL [392.4 h]; Cost |  |  | T15P226005C0 | PT | C | 15 | P2 | ME | 260 | 05 | 2n | BILL 10 | B10 | S2 | 2F | R00 | ACF07 | MEP | 260 |  |  |  |  |  |  |  |  |  |  |  |  |
| T15P226007C0 |  | PT-15 ; 2nd Fix, Cable Pulling (PAT RM-2) | 48d | 2012-04-28 | 2012-06-24 | T15P209201C0 SS+6d, T15P209205C0 |  |  |  |  | 130.3d | 97.62d | ELECTRICAL [2683.2 h]; Cost |  |  | T15P226007C0 | PT | C | 15 | P2 | ME | 260 | 07 | 2n | BILL 10 | B10 | S2 | 2F | R00 | ACF07 | MEP | 260 |  |  |  |  |  |  |  |  |  |  |  |  |
| T15P226011C0 |  | PT-15 ; 2nd Fix, Inst of Equipment (DB) (PAT RM-2) | 54d | 2012-04-28 | 2012-07-01 | T15P209205C0 |  |  |  |  | 124.05d | 75.12d | ELECTRICAL [878.4 h]; Cost |  |  | T15P226011C0 | PT | C | 15 | P2 | ME | 260 | 11 | 2n | BILL 10 | B10 | S2 | 2F | R00 | ACF04 | MEP | 260 |  |  |  |  |  |  |  |  |  |  |  | E |
| T15P226053C0 |  | PT-15 ; 2nd Fix, Wiring / Cabling (PAT RM-2) | 42d | 2012-04-28 | 2012-06-17 | T15P209203C0, T15P209205C0 |  |  |  |  | 53.8d | 21.12d | ELECTRICAL [392.4 h]; Cost |  |  | T15P226053C0 | PT | C | 15 | P2 | ME | 260 | 53 | 2n | BILL 10 | B10 | S2 | 2F | R00 | ACF07 | MEP | 260 | 389 | 977 |  |  |  |  |  |  |  |  |  |  |
| T15P205501C0 |  | PT-15 ; Handrails & balustrade (PAT RM-2) | 30.5d | 2012-06-02 | 2012-07-08 | T15P209901C0 |  |  |  |  | 69.8d | 32.62d | SECONDARY STEEL [174 h]; Cost |  |  | T15P205501C0 | PT | C | 15 | P2 | SW | 055 | 01 |  | BILL 10 | B10 | S2 | 01 | R00 | ACF03 |  | a |  |  |  |  |  |  |  |  |  |  |  |  |
| T15P209501C0 |  | PT-15 ; Ceiling Grid and Service Tile (PAT RM-2) | 24d | 2012-06-12 | 2012-07-11 | T15P205503C0, T15P209205C0 SS+15d, T15P221117C0, T15P223008C0, T15P223009C0, T15P223015C0, T15P227001C0, T15P226053C0 FF, T15P209901C0 |  |  |  |  | 32.68d | 0d | CEILING GRID FOR GYPSUM [3691.46 h]; CEILING GRID FOR GYPSUM [315.76 m2]; Cost |  |  | T15P209501C0 | PT | C | 15 | P2 | CE | 095 | 01 |  | BILL 10 | B10 | S2 | 01 | R00 | ACF06 |  | 095 | 323 | 952 |  |  |  |  |  |  |  |  |  |  |
| T15P209510C0 |  | PT-15 ; Patient Lift Ceiling Rail (by others) (PAT RM-2) | 30d | 2012-06-12 | 2012-07-18 | T15P209501C0 SS |  |  |  |  | 109.18d | 76.5d | Labor General [0.1 h]; Cost |  |  | I06P109501C0 | PT | C | 15 | P2 | CE | 095 | 10 |  | BILL 10 | B10 | S2 | 02 | R00 | ACF06 |  | 095 | 323 | 952 |  |  |  |  |  |  |  |  |  |  |
| T15P226015C0 |  | PT-15 ; Final Fix, Termination & Gladding of Cables (PAT RM-2) | 36d | 2012-06-17 | 2012-07-29 | T15P226005C0 |  |  |  |  | 95.8d | 63.12d | ELECTRICAL [148.8 h]; Cost |  |  | T15P226015C0 | PT | C | 15 | P2 | ME | 260 | 15 | FF | BILL 10 | B10 | S2 | FF | R00 | ACF07 | MEP | 260 |  |  |  |  |  |  |  |  |  |  |  |  |
| T15P223021C0 |  | PT-15 ; 2nd Fix, Inst of Flexible Duct & Plenum boxes (PAT RM-2) | 42d | 2012-06-20 | 2012-08-08 | T15P209205C0, T15P209501C0 SS+6d |  |  |  |  | 50.68d | 0d | MECHANICAL [30 h]; Cost |  |  | T15P223021C0 | PT | C | 15 | P2 | ME | 230 | 21 | 2n | BILL 10 | B10 | S2 | 2F | R00 | ACF07 | MEP | 230 |  |  |  |  |  |  |  |  |  |  |  |  |
| T15P209305C0 |  | PT-15 ; Flooring (Terrazzo) (PAT RM-2) | 30d | 2012-07-11 | 2012-08-15 | T15P207103C0, T15P209501C0 |  |  |  |  | 78.93d | 0d | TERRAZO FLOOR [1073 m2]; TERRAZO FLOOR [1936 h]; Cost |  |  | T15P209305C0 | PT | C | 15 | P2 | FF | 096 | 05 |  | BILL 10 | B10 | S2 | 07 | R00 | ACF06 |  | TZ | 106 | 1000 |  |  |  |  |  |  |  |  |  |  |
| T15P209601C0 |  | PT-15 ; Flooring (Rubber & etc) (PAT RM-2) | 30d | 2012-07-11 | 2012-08-15 | T15P209501C0, T15P205501C0 FF |  |  |  |  | 37.18d | 0d | RUBBER FLOOR [24 h]; RUBBER FLOOR [58 m2]; Cost |  |  | T15P209601C0 | PT | C | 15 | P2 | FF | 096 | 01 |  | BILL 10 | B10 | S2 | 03 | R00 | ACF06 |  | RF | 326 | 955 |  |  |  |  |  |  |  |  |  |  |
| T15P209905C0 |  | PT-15 ; Ceiling Prime & 1st coat (PAT RM-2) | 30d | 2012-07-11 | 2012-08-15 | T15P209501C0 |  |  |  |  | 108.93d | 0d | CEILING PAINT [28 h]; CEILING PAINT [33 m2]; Cost |  |  | T15P209905C0 | PT | C | 15 | P2 | PA | 099 | 05 |  | BILL 10 | B10 | S2 | 01 | R00 | ACF06 |  | 099 | 330 | 958 |  |  |  |  |  |  |  |  |  |  |
| T15P221115C0 |  | PT-15 ; 2nd Fix, Inst of Sprinkler droppers (PAT RM-2) | 42d | 2012-07-11 | 2012-09-01 | T15P209501C0 |  |  |  |  | 32.68d | 0d | MECHANICAL [1602 h]; Cost |  |  | T15P221115C0 | PT | C | 15 | P2 | ME | 211 | 15 | 2n | BILL 10 | B10 | S2 | 2F | R00 | ACF07 | MEP | 211 |  |  |  |  |  |  |  |  |  |  |  |  |
| T15P226017C0 |  | PT-15 ; Final Fix, Inst of Ceiling rose (PAT RM-2) | 36d | 2012-07-11 | 2012-08-25 | T15P209501C0 |  |  |  |  | 56.68d | 0d | ELECTRICAL [61.2 h]; Cost |  |  | T15P226017C0 | PT | C | 15 | P2 | ME | 260 | 17 | FF | BILL 10 | B10 | S2 | FF | R00 | ACF07 | MEP | 260 |  |  |  |  |  |  |  |  |  |  |  |  |
| T15P227002C0 |  | PT-15 ; 2nd Fix, Wiring Droppers (PAT RM-2) | 42d | 2012-07-11 | 2012-09-01 | T15P209501C0 |  |  |  |  | 62.68d | 0d | ELECTRICAL [392.4 h]; Cost |  |  | T15P227002C0 | PT | C | 15 | P2 | ME | 270 | 02 | 2n | BILL 10 | B10 | S2 | 2F | R00 | ACF07 | MEP | 270 |  |  |  |  |  |  |  |  |  |  |  |  |
| T15P227020C0 |  | PT-15 ; 2nd Fix, Inst of ELV Equipment (Panels) (PAT RM-2) | 66d | 2012-07-11 | 2012-09-29 | T15P209205C0, T15P209501C0 |  |  |  |  | 48.93d | 0d | ELECTRICAL [1819.2 h]; Cost |  |  | T15P227020C0 | PT | C | 15 | P2 | ME | 270 | 20 | 2n | BILL 10 | B10 | S2 | 2F | R00 | ACF04 | MEP | 270 |  |  |  |  |  |  |  |  |  |  |  | E |
| T15P240303C0 |  | PT-15 ; Final Fix, Pneumatic Station (PAT RM-2) | 36d | 2012-07-11 | 2012-08-25 | T15P209501C0 |  |  |  |  | 120.93d | 88.25d | MECHANICAL [2974.8 h]; Cost |  |  | T15P240303C0 | PT | C | 15 | P2 | ME | 403 | 03 | FF | BILL 10 | B10 | S2 | FF | R00 | ACF07 | MEP | 403 |  |  |  |  |  |  |  |  |  |  |  |  |
| T15P226003C0 |  | PT-15 ; Final Fix, Inst of Light fittings (PAT RM-2) | 48d | 2012-07-18 | 2012-09-15 | T15P209501C0, T15P226017C0 SS+6d |  |  |  |  | 56.68d | 24d | ELECTRICAL [7815.6 h]; Cost |  |  | T15P226003C0 | PT | C | 15 | P2 | ME | 260 | 03 | FF | BILL 10 | B10 | S2 | FF | R00 | ACF07 | MEP | 260 |  |  |  |  |  |  |  |  |  |  |  |  |
| T15P227030C0 |  | PT-15 ; Final Fix, Inst of ELV device (Detector/Speaker) (PAT RM-2) | 42d | 2012-07-18 | 2012-09-08 | T15P209501C0, T15P227002C0 SS+6d |  |  |  |  | 62.68d | 30d | ELECTRICAL [3571.2 h]; Cost |  |  | T15P227030C0 | PT | C | 15 | P2 | ME | 270 | 30 | FF | BILL 10 | B10 | S2 | FF | R00 | ACF07 | MEP | 270 |  |  |  |  |  |  |  |  |  |  |  |  |
| T15P223019C0 |  | PT-15 ; Final Fix, Inst of Grilles & Diffusers (PAT RM-2) | 36d | 2012-08-08 | 2012-09-22 | T15P209501C0, T15P223021C0 |  |  |  |  | 50.68d | 18d | MECHANICAL [1498.8 h]; Cost |  |  | T15P223019C0 | PT | C | 15 | P2 | ME | 230 | 19 | FF | BILL 10 | B10 | S2 | FF | R00 | ACF07 | MEP | 230 |  |  |  |  |  |  |  |  |  |  |  |  |
| T15P206101C0 |  | PT-15 ; Wood / caseworks (PAT RM-2) | 48d | 2012-08-15 | 2012-10-13 | T15CO04407C0, T15P209501C0, T15P209601C0, T15P209901C0, TAFWA00101M0 |  |  |  |  | 37.18d | 0d | WOOD WORK/CASEWORK [659.26 no]; WOOD WORK/CASEWORK [1445 h]; Cost |  |  | T15P206101C0 | PT | C | 15 | P2 | WO | 061 | 01 |  | BILL 10 | B10 | S2 | WW | R00 | ACF06 |  | 061 | 332 | 960 |  |  |  |  |  |  |  |  |  |  |
| T15P206102C0 |  | PT-15 ; Head/Foot Wall (PAT RM-2) | 54d | 2012-08-15 | 2012-10-20 | T15CO04407C0, T15P209501C0, TAFWA00101M0, T15P206101C0 SS |  |  |  |  | 54.93d | 0d | WOOD WORK/CASEWORK [1649 h]; Cost |  |  | T15P206102C0 | PT | C | 15 | P2 | WO | 061 | 02 |  | BILL 10 | B10 | S2 | WW | R00 | ACF06 |  | 061 | 332 | 960 |  |  |  |  |  |  |  |  |  |  |
| T15P208107C0 |  | PT-15 ; Doors (PAT RM-2) | 36d | 2012-08-15 | 2012-09-29 | T15P208103C0, T15P209501C0, T15P209601C0, T15P209901C0 |  |  |  |  | 73.18d | 0d | ASSORTED DOORS [430 h]; ASSORTED DOORS [43 no]; Cost |  |  | T15P208107C0 | PT | C | 15 | P2 | DO | 081 | 07 |  | BILL 10 | B10 | S2 | DR | R00 | ACF06 |  | 081 | 317 | 948 | 08 |  |  |  |  |  |  |  |  |  |
| T15P209903C0 |  | PT-15 ; Wall Final Paint (PAT RM-2) | 30d | 2012-08-15 | 2012-09-22 | T15P209901C0, T15P209905C0, T15P209501C0 |  |  |  |  | 108.93d | 72d | WALL PAINT [225 h]; WALL PAINT [279 m2]; Cost |  |  | T15P209903C0 | PT | C | 15 | P2 | PA | 099 | 03 |  | BILL 10 | B10 | S2 | 02 | R00 | ACF06 |  | 099 | 329 | 957 |  |  |  |  |  |  |  |  |  |  |
| T15P222025C0 |  | PT-15 ; Final Fix, Inst of Sanitary Ware (PAT RM-2) | 42d | 2012-08-15 | 2012-10-06 | T15P209205C0, T15P209305C0 |  |  |  |  | 78.93d | 0d | PLUMBING [3361.2 h]; Cost |  |  | T15P222025C0 | PT | C | 15 | P2 | ME | 220 | 25 | FF | BILL 10 | B10 | S2 | FF | R00 | ACF07 | MEP | 220 |  |  |  |  |  |  |  |  |  |  |  |  |
| T15P222021C0 |  | PT-15 ; Final Fix, Terminate Sanitary Ware & Appliances (PAT RM-2) | 42d | 2012-08-25 | 2012-10-13 | T15P222011C0, T15P222025C0 SS+6d |  |  |  |  | 78.93d | 46.25d | PLUMBING [3361.2 h]; Cost |  |  | T15P222021C0 | PT | C | 15 | P2 | ME | 220 | 21 | FF | BILL 10 | B10 | S2 | FF | R00 | ACF07 | MEP | 220 |  |  |  |  |  |  |  |  |  |  |  |  |
| T15P221113C0 |  | PT-15 ; Final Fix, Inst of Sprinklers head/ Extinguisher (PAT RM-2) | 36d | 2012-09-01 | 2012-10-13 | T15P209501C0, T15P221115C0 |  |  |  |  | 32.68d | 0d | MECHANICAL [234 h]; Cost |  |  | T15P221113C0 | PT | C | 15 | P2 | ME | 211 | 13 | FF | BILL 10 | B10 | S2 | FF | R00 | ACF07 | MEP | 211 |  |  |  |  |  |  |  |  |  |  |  |  |

| ID | WBS | Activity | Duration | Start | Finish | Predecessors | Complete | Remaining | Planned start | Planned finish | Total float | Free float | Resources | Change Order # | NEW ACTIVITY ID | change id | CCAD BUILDING(SET) | CCAD PHASE(SET) | CCAD DIVISION(SET) | CCAD FLOOR(SET) | CCAD ZONE(SET) | CCAD WORK(SET) | CCAD SECTION(SET) | CCAD SERIAL No.(SET) | CCAD CBS(SET) | CCAD BILL(SET) | CCAD HANDOVER(SET) | CCAD TAG(SET) | CCAD REV(SET) | CCADACF (SET) | CCAD SSCF | CCAD SUB ZONE MEP(SET) | CCAD CSA | U% | Act Selector % | CCAD MEQ | IDDD |
| --- | --- | --- | --- | --- | --- | --- | --- | --- | --- | --- | --- | --- | --- | --- | --- | --- | --- | --- | --- | --- | --- | --- | --- | --- | --- | --- | --- | --- | --- | --- | --- | --- | --- | --- | --- | --- | --- |
| T15P208709C0 |  | PT-15 ; Ironmongery (PAT RM-2) | 29.75d | 2012-09-29 | 2012-11-04 | T15P208107C0 |  |  |  |  | 73.18d | 40.5d | IRONMONGERY [610 h]; IRONMONGERY [61 no]; Cost | 322 | 951 | T15P208709C0 | PT | C | 08 | 15 | P2 | DO | 087 | 09 | BILL 10 | B10 | S2 | IM | R00 | ACF06 | 087 |  |  |  |  |  |  |
| T15P209701C0 |  | PT-15 ; Wall finishes (ST, WD, WC) (PAT RM-2) | 36d | 2012-09-29 | 2012-11-12 | T15P226011C0, T15P227020C0, T15P209501C0, T15P209601C0, T15P209305C0 |  |  |  |  | 48.93d | 0d | ASSORTED WALL FINISH [369 h]; ASSORTED WALL FINISH [423 m2]; Cost | 105 | 1002 | T15P209701C0 | PT | C |  | 15 | P2 | WF | 097 | 01 | BILL 10 | B10 | S2 | 01 | R00 | ACF06 | 097 |  |  |  |  |  |  |
| T15P201006C0 |  | PT-15 ; 2nd, Ceiling Inspection by Consultants (PAT RM-2) | 4.5d | 2012-10-13 | 2012-10-17 | T15P221115C0, T15P223009C0, T15P223015C0, T15P227002C0, T15P209501C0, T15P221113C0, T15P223019C0, T15P226015C0, T15P226017C0, T15P226003C0, T15P227030C0 |  |  |  |  | 32.68d | 0d | Labor General [0.6 h]; Cost |  |  | T15P201006C0 | PT | C |  | 15 | P2 | ME | 010 | 06 | BILL 10 | B10 | S2 | CI | R00 | ACF07 | 010 | 2n | MEP |  |  |  |  |
| T15P209503C0 |  | PT-15 ; Ceiling closure - ACT/Gypsum (PAT RM-2) | 23.75d | 2012-10-17 | 2012-11-18 | T15P201006C0, T15P209510C0, T15P221115C0, T15P226005C0, T15P227001C0, T15P227002C0, TAFOA09513C1 FF, T15P206101C0, T15P226007C0 |  |  |  |  | 32.68d | 0d | ASSORTED CEILING FINISH [416.36 h]; CEILING GYPSUM [103.53 h]; ASSORTED CEILING FINISH [677 m2]; CEILING GYPSUM [316 m2]; Cost | 324 | 953 | T15P209503C0 | PT | C |  | 15 | P2 | CE | 095 | 03 | BILL 10 | B10 | S2 | 02 | R00 | ACF06 | 095 |  |  |  |  |  |  |
| T15P222029C0 |  | PT-15 ; Final Fix, Medical Gas pipe (PAT RM-2) | 18d | 2012-10-20 | 2012-11-12 | T15P209501C0, T15P206102C0 |  |  |  |  | 54.93d | 22.25d | PLUMBING [1149.6 h]; Cost |  |  | T15P222029C0 | PT | C |  | 15 | P2 | ME | 220 | 29 | BILL 10 | B10 | S2 | FF | R00 | ACF07 | 220 | FF | MEP |  |  |  |  |
| T15P211001C0 |  | PT-15 ; Wall Protection (WP, CG, WG, FCG) (PAT RM-2) | 18d | 2012-11-12 | 2012-12-05 | T15P209701C0, T15P209903C0 SS |  |  |  |  | 48.93d | 16.25d | FF&E [18 h]; Cost | 326 | 1001 | T15P211001C0 | PT | C |  | 15 | P2 | WF | 110 | 01 | BILL 10 | B10 | S2 | 03 | R00 | ACF08 | b |  |  |  |  |  |  |
| T15P209685C1 |  | PT-15, Carpet Tile Finish (Patient Room-2) | 0d | 2012-11-18 | 2012-11-18 | T15P209903C0 SS, T15P209907C0 SS |  |  |  |  | 62.68d | 40.89d | Cost |  |  |  | PT | C |  | 15 | P2 | FF | 096 |  |  | B10 |  |  | R00 | ACF06 | CPT |  | CPT |  |  |  |  |
| T15P209907C0 |  | PT-15 ; Ceiling Final paint (PAT RM-2) | 18d | 2012-11-18 | 2012-12-10 | T15P209601C0, T15P209905C0, T15P209503C0 |  |  |  |  | 44.68d | 0d | CEILING PAINT [15 h]; CEILING PAINT [18 m2]; Cost | 331 | 959 | T15P209907C0 | PT | C |  | 15 | P2 | PA | 099 | 07 | BILL 10 | B10 | S2 | 02 | R00 | ACF06 | 099 |  |  |  |  |  |  |
| T15P211003C0 |  | PT-15 ; FF & E (PAT RM-2) | 18d | 2012-11-18 | 2012-12-10 | T15P209601C0, T15P206101C0, T15P209503C0 |  |  |  |  | 44.68d | 12d | FF&E [715 h]; Cost | 333 | 961 | T15P211003C0 | PT | C |  | 15 | P2 | WO | 110 | 03 | BILL 10 | B10 | S2 | 04 | R00 | ACF08 | a |  |  |  |  |  |  |
| T15P222027C0 |  | PT-15 ; Final Fix, Inst of All drain (PAT RM-2) | 18d | 2012-11-18 | 2012-12-10 | T15P209305C0, T15P209503C0 |  |  |  |  | 32.68d | 0d | PLUMBING [1378.8 h]; Cost |  |  | T15P222027C0 | PT | C |  | 15 | P2 | ME | 220 | 27 | BILL 10 | B10 | S2 | FF | R00 | ACF07 | 220 | FF | MEP |  |  |  |  |
| T15P226019C0 |  | PT-15 ; Final Fix, Inst of Switch/Sockets (PAT RM-2) | 18d | 2012-11-18 | 2012-12-10 | T15P209901C0, T15P209503C0 |  |  |  |  | 32.68d | 0d | ELECTRICAL [362.4 h]; Cost |  |  | T15P226019C0 | PT | C |  | 15 | P2 | ME | 260 | 19 | BILL 10 | B10 | S2 | FF | R00 | ACF07 | 260 | FF | MEP |  |  |  |  |
|  | 10 | **Precommissioning Tesing & snagging (PAT RM-2)** |  | 2012-12-10 | 2013-01-23 |  |  |  |  |  |  |  |  |  |  |  |  |  |  |  |  |  |  |  |  |  |  |  |  |  |  |  |  |  |  |  |  |
| T15TS01801C0 |  | PT-15 ; MEP de-snag, FIREM sign-off | 12d | 2012-12-10 | 2012-12-24 | T15P222025C0, T15P222027C0, T15P226015C0, T15P222021C0, T15P221113C0, T15P223019C0, T15P240303C0, T15P222029C0, T15P226017C0, T15P226003C0, T15P227030C0, T15P226019C0 |  |  |  |  | 32.68d | 0d | TESTING & COMMISSIONING [2040 h]; Cost |  |  | T15TS01801C0 | PT | C |  | 15 | TS | SC | 018 | 01 | BILL 10 | B10 | S2 | 01 | R00 | ACF07 | 018 |  |  |  |  |  |  |
| T15TS01806C0 |  | PT-15 ; Touch-up & Clean / JV inspection /CIR /De-snag | 17.88d | 2012-12-24 | 2013-01-15 | T15P205501C0, T15P205511C0, T15P206101C0, T15P206102C0, T15P208709C0, T15P209305C0, T15P209601C0, T15P209701C0, T15P209903C0, T15P209907C0, T15P211001C0, T15P211003C0, T15TS01801C0, T15P209503C0 |  |  |  |  | 32.68d | 0d | TESTING & COMMISSIONING [128 h]; Cost |  |  | T15TS01802C0 | PT | C |  | 15 | TS | SC | 018 | 02 | BILL 10 | B10 | S2 | 02 | R00 | ACF07 | 018 |  |  |  |  |  |  |
| T15TS01809C0 |  | PT-15 ; Consultant's final de-snag inspection | 7d | 2013-01-15 | 2013-01-23 | T15TS01806C0 |  |  |  |  | 32.68d | 23.68d | Labor General [0.5 h]; Cost |  |  | T15TS01803C0 | PT | C |  | 15 | TS | SC | 018 | 03 | BILL 10 | B10 | S2 | 03 | R00 | ACF07 | 018 |  |  |  |  |  |  |
|  | 05 | **TR Room** |  | 2011-09-05 | 2012-09-11 |  |  |  |  |  |  |  |  |  |  |  |  |  |  |  |  |  |  |  |  |  |  |  |  |  |  |  |  |  |  |  |  |
| T15TR09201C0 |  | PT-15 ; Metal Studs (TR RM) | 18d | 2011-09-05 A | 2011-11-24 | T15PA09201C0 SS | 20% | 14.4d | 2011-11-01 | 2011-11-24 | 69.6d | 0d | PARTITIONS [231 h]; PARTITIONS - Metal Studs [32 m]; Cost | 313 | 885 | T15TR09201C0 | PT | C |  | 15 | TR | PT | 092 | 01 | BILL 10 | B10 | S2 | 1F | R00 | ACF06 | 092 |  | GP | 20 | PMS |  |  |
| T15TR09203C0 |  | PT-15 ; Partitions 1st face (TR RM) | 24d | 2011-11-24 | 2011-12-25 | T15TR09201C0 |  |  |  |  | 87.6d | 18d | PARTITIONS [32 m]; PARTITIONS [177 h]; Cost | 314 | 886 | T15TR09203C0 | PT | C |  | 15 | TR | PT | 092 | 03 | BILL 10 | B10 | S2 | 2F | R00 | ACF06 | 092 |  | GP |  | P1F |  |  |
| T15TR26026C0 |  | PT-15 ; 2nd Fix, Conduit (TR RM) | 30d | 2011-11-24 | 2012-01-02 | T15TR09201C0 |  |  |  |  | 69.6d | 0d | ELECTRICAL [734.4 h]; Cost |  |  | T15TR26026C0 | PT | C |  | 15 | TR | ME | 260 | 26 | BILL 10 | B10 | S2 | 2F | R00 | ACF07 | 260 | 2n | MEP |  |  |  |  |
| T15TR08101C0 |  | PT-15 ; Door Frames (TR RM) | 18d | 2011-12-28 | 2012-01-18 | T15TR09201C0, GNHE08101C0 FS+126d |  |  |  |  | 97d | 27.4d | ASSORTED DOORS [19 h]; Cost | 316 | 20001090 | T15TR08101C0 | PT | C | 08 | 15 | TR | DO | 081 | 01 | BILL 10 | B10 | S2 | DF | R00 | ACF06 | 081 |  |  |  |  |  |  |
| T15TR01005C0 |  | PT-15 ; 2nd, Wall Inspection by Consultant (TR RM) | 12d | 2012-01-02 | 2012-01-16 | T15TR26026C0 |  |  |  |  | 69.6d | 0d | Labor General [0.6 h]; Cost |  |  | T15TR01005C0 | PT | C |  | 15 | TR | ME | 010 | 05 | BILL 10 | B10 | S2 | WI | R00 | ACF07 | 010 | 2n | MEP |  |  |  |  |
| T15TR09205C0 |  | PT-15 ; Partitions Closing (TR RM) | 30d | 2012-01-16 | 2012-02-21 | T15TR01005C0, T15TR09201C0, T15TR09203C0, TAFOA09214C1 FF, T15TR08101C0 FF |  |  |  |  | 69.6d | 0d | PARTITIONS [32 m]; PARTITIONS [235 h]; Cost | 315 | 887 | T15TR09205C0 | PT | C |  | 15 | TR | PT | 092 | 05 | BILL 10 | B10 | S2 | FF | R00 | ACF06 | 092 |  | GP |  | P2F |  |  |
| T15TR09901C0 |  | PT-15 ; Wall Prime & 1st coat (TR RM) | 18d | 2012-02-21 | 2012-03-13 | T15TR09205C0 |  |  |  |  | 69.6d | 0d | WALL PAINT [37 h]; WALL PAINT [45 m2]; Cost | 360 | 20001110 | T15TR09901C0 | PT | C |  | 15 | TR | PA | 099 | 01 | BILL 10 | B10 | S2 | 01 | R00 | ACF06 | 099 |  |  |  |  |  |  |
| T15TR23009C0 |  | PT-15 ; 2nd Fix, Inst of VAV'S CHW connection (TR RM) | 36d | 2012-02-21 | 2012-04-03 | T15TR09205C0 |  |  |  |  | 69.6d | 0d | MECHANICAL [1450.8 h]; Cost |  |  | T15TR23009C0 | PT | C |  | 15 | TR | ME | 230 | 09 | BILL 10 | B10 | S2 | 2F | R00 | ACF07 | 230 | 2n | MEP |  |  |  |  |
| T15TR23011C0 |  | PT-15 ; 2nd Fix, Inst of VCD's/FD's (TR RM) | 36d | 2012-02-21 | 2012-04-03 | T15TR09205C0 |  |  |  |  | 69.6d | 0d | MECHANICAL [1753.2 h]; Cost |  |  | T15TR23011C0 | PT | C |  | 15 | TR | ME | 230 | 11 | BILL 10 | B10 | S2 | 2F | R00 | ACF07 | 230 | 2n | MEP |  |  |  |  |
| T15TR26007C0 |  | PT-15 ; 2nd Fix, Cable Pulling (TR RM) | 36d | 2012-02-21 | 2012-04-03 | T15TR09203C0, T15TR09205C0 |  |  |  |  | 117.6d | 48d | ELECTRICAL [2683.2 h]; Cost |  |  | T15TR26007C0 | PT | C |  | 15 | TR | ME | 260 | 07 | BILL 10 | B10 | S2 | 2F | R00 | ACF07 | 260 | 2n | MEP |  |  |  |  |
| T15TR26009C0 |  | PT-15 ; 2nd Fix, Inst of Equipment (DB, TR, SG,BUS) (TR RM) | 54d | 2012-02-21 | 2012-04-24 | T15TR09205C0 |  |  |  |  | 81.6d | 0d | ELECTRICAL [3943.2 h]; Cost |  |  | T15TR26009C0 | PT | C |  | 15 | TR | ME | 260 | 09 | BILL 10 | B10 | S2 | 2F | R00 | ACF04 | 260 | 2n | MEP |  |  | E |  |
| T15TR26027C0 |  | PT-15 ; 2nd Fix, Wiring / Cabling (TR RM) | 30d | 2012-02-21 | 2012-03-27 | T15TR09203C0, T15TR09205C0 |  |  |  |  | 135.6d | 66d | ELECTRICAL [392.4 h]; Cost | 417 | 1318 | T15TR26027C0 | PT | C |  | 15 | TR | ME | 260 | 27 | BILL 10 | B10 | S2 | 2F | R00 | ACF07 | 260 | 2n | MEP |  |  |  |  |
| T15TR09501C0 |  | PT-15 ; Ceiling Grid and Service Tile (TR RM) | 24d | 2012-03-13 | 2012-04-10 | T15TR09205C0 SS+15d, T15TR09901C0 |  |  |  |  | 69.6d | 0d | CEILING GRID FOR GYPSUM [297.07 h]; CEILING GRID FOR GYPSUM [25.26 m2]; Cost | 336 | 1327 | T15TR09501C0 | PT | C |  | 15 | TR | CE | 095 | 01 | BILL 10 | B10 | S2 | 01 | R00 | ACF06 | 095 |  |  |  |  |  | 1 |
| T15TR09903C0 |  | PT-15 ; Wall - Final Paint (TR RM) | 12d | 2012-03-13 | 2012-03-27 | T15TR09901C0 |  |  |  |  | 175.85d | 106.25d | WALL PAINT [20 h]; WALL PAINT [24 m2]; Cost | 361 | 1312 | T15TR09903C0 | PT | C |  | 15 | TR | PA | 099 | 03 | BILL 10 | B10 | S2 | 02 | R00 | ACF06 | 099 |  |  |  |  |  |  |
| T15TR23013C0 |  | PT-15 ; 2nd Fix, Insulation of CHW pipe & Duct (TR RM) | 48d | 2012-04-03 | 2012-05-29 | T15TR23009C0, T15TR23011C0 |  |  |  |  | 69.6d | 0d | MECHANICAL [3064.8 h]; Cost |  |  | T15TR23013C0 | PT | C |  | 15 | TR | ME | 230 | 13 | BILL 10 | B10 | S2 | 2F | R00 | ACF07 | 230 | 2n | MEP |  |  |  |  |
| T15TR09601C0 |  | PT-15 ; Floor Finishes (TR RM) | 18d | 2012-04-10 | 2012-05-01 | T15TR09501C0 |  |  |  |  | 69.6d | 0d | ASSORTED FLOOR FINISH [1248 h]; ASSORTED FLOOR FINISH [693 m2]; Cost | 359 | 20001120 | T15TR09601C0 | PT | C |  | 15 | TR | FF | 096 | 01 | BILL 10 | B10 | S2 | 01 | R00 | ACF06 | FF |  |  |  |  |  |  |
| T15TR09905C0 |  | PT-15 ; Ceiling Prime & 1st coat (TR RM) | 17.5d | 2012-04-10 | 2012-04-30 | T15TR09501C0 |  |  |  |  | 136.6d | 50.5d | CEILING PAINT [4 h]; CEILING PAINT [3 m2]; Cost | 362 | 1313 | T15TR09905C0 | PT | C |  | 15 | TR | PA | 099 | 05 | BILL 10 | B10 | S2 | 01 | R00 | ACF06 | 099 |  |  |  |  |  |  |
| T15TR23003C0 |  | PT-15 ; Final Fix, Inst of Grilles & Diffusers (TR RM) | 30d | 2012-04-10 | 2012-05-15 | T15TR09501C0 |  |  |  |  | 93.6d | 24d | MECHANICAL [1498.8 h]; Cost |  |  | T15TR23003C0 | PT | C |  | 15 | TR | ME | 230 | 03 | BILL 10 | B10 | S2 | FF | R00 | ACF07 | 230 | FF | MEP |  |  |  |  |
| T15TR23023C0 |  | PT-15 ; 2nd Fix, Flexible ducts (TR RM) | 30d | 2012-04-10 | 2012-05-15 | T15TR09205C0, T15TR09501C0 |  |  |  |  | 93.6d | 24d | MECHANICAL [30 h]; Cost | 412 | 20001140 | T15TR23023C0 | PT | C |  | 15 | TR | ME | 230 | 23 | BILL 10 | B10 | S2 | 2F | R00 | ACF07 | 230 | 2n | MEP |  |  |  |  |
| T15TR23074C0 |  | PT-15 ; Final Fix, Grilles, panels & diffusers (TR RM) | 30d | 2012-04-10 | 2012-05-15 | T15TR09501C0 |  |  |  |  | 93.6d | 24d | MECHANICAL [1498.8 h]; Cost | 419 | 20001160 | T15TR23074C0 | PT | C |  | 15 | TR | ME | 230 | 74 | BILL 10 | B10 | S2 | FF | R00 | ACF07 | 230 | FF | MEP |  |  |  |  |
| T15TR26005C0 |  | PT-15 ; 2nd Fix, Wiring for Power/Lighting/Emergency (TR RM) | 30d | 2012-04-10 | 2012-05-15 | T15TR26026C0, T15TR09501C0 |  |  |  |  | 93.6d | 24d | ELECTRICAL [392.4 h]; Cost |  |  | T15TR26005C0 | PT | C |  | 15 | TR | ME | 260 | 05 | BILL 10 | B10 | S2 | 2F | R00 | ACF07 | 260 | 2n | MEP |  |  |  |  |
| T15TR26015C0 |  | PT-15 ; Final Fix, Inst of Ceiling rose (TR RM) | 30d | 2012-04-10 | 2012-05-15 | T15TR09501C0 |  |  |  |  | 93.6d | 24d | ELECTRICAL [61.2 h]; Cost |  |  | T15TR26015C0 | PT | C |  | 15 | TR | ME | 260 | 15 | BILL 10 | B10 | S2 | FF | R00 | ACF07 | 260 | FF | MEP |  |  |  |  |
| T15TR26019C0 |  | PT-15 ; Final Fix, Inst of Light fittings (TR RM) | 36d | 2012-04-10 | 2012-05-22 | T15TR09501C0 |  |  |  |  | 87.6d | 18d | ELECTRICAL [7815.6 h]; Cost |  |  | T15TR26019C0 | PT | C |  | 15 | TR | ME | 260 | 19 | BILL 10 | B10 | S2 | FF | R00 | ACF07 | 260 | FF | MEP |  |  |  |  |
| T15TR26076C0 |  | PT-15 ; Final Fix, Lighting fittings (TR RM) | 36d | 2012-04-10 | 2012-05-22 | T15TR09501C0 |  |  |  |  | 87.6d | 18d | ELECTRICAL [7815.6 h]; Cost | 420 | 20001170 | T15TR26076C0 | PT | C |  | 15 | TR | ME | 260 | 76 | BILL 10 | B10 | S2 | FF | R00 | ACF07 | 260 | FF | MEP |  |  |  |  |
| T15TR27002C0 |  | PT-15 ; 2nd Fix, Dressing of ELV panels (TR RM) | 30d | 2012-04-10 | 2012-05-15 | T15TR09205C0, T15TR27020C0 SS |  |  |  |  | 119.6d | 50d | ELECTRICAL [273.6 h]; Cost |  |  | T15TR27002C0 | PT | C |  | 15 | TR | ME | 270 | 02 | BILL 10 | B10 | S2 | 2F | R00 | ACF07 | 270 | 2n | MEP |  |  |  |  |
| T15TR27020C0 |  | PT-15 ; 2nd Fix, Inst of ELV Equipment (Panels) (TR RM) | 48d | 2012-04-10 | 2012-06-05 | T15TR09205C0, T15TR09501C0 |  |  |  |  | 119.6d | 0d | ELECTRICAL [1819.2 h]; Cost |  |  | T15TR27020C0 | PT | C |  | 15 | TR | ME | 270 | 20 | BILL 10 | B10 | S2 | 2F | R00 | ACF04 | 270 | 2n | MEP |  |  | E |  |
| T15TR27030C0 |  | PT-15 ; Final Fix, Inst of ELV device (Detector/Speaker) (TR RM) | 36d | 2012-04-10 | 2012-05-22 | T15TR09501C0 |  |  |  |  | 87.6d | 18d | ELECTRICAL [3571.2 h]; Cost |  |  | T15TR27030C0 | PT | C |  | 15 | TR | ME | 270 | 30 | BILL 10 | B10 | S2 | FF | R00 | ACF07 | 270 | FF | MEP |  |  |  |  |
| T15TR26013C0 |  | PT-15 ; Final Fix, Termination & Gladding of Cables (TR RM) | 30d | 2012-04-24 | 2012-05-29 | T15TR26009C0, T15TR09501C0 |  |  |  |  | 81.6d | 12d | ELECTRICAL [148.8 h]; Cost |  |  | T15TR26013C0 | PT | C |  | 15 | TR | ME | 260 | 13 | BILL 10 | B10 | S2 | FF | R00 | ACF07 | 260 | FF | MEP |  |  |  |  |
| T15TR08105C0 |  | PT-15 ; Doors (TR RM) | 18d | 2012-05-01 | 2012-05-22 | T15TR08101C0, T15TR09501C0, T15TR09601C0, T15TR09901C0 |  |  |  |  | 111.85d | 0d | ASSORTED DOORS [40 h]; ASSORTED DOORS [4 no]; Cost | 317 | 1325 | T15TR08105C0 | PT | C | 08 | 15 | TR | DO | 081 | 05 | BILL 10 | B10 | S2 | DR | R00 | ACF06 | 081 |  |  |  |  |  |  |
| T15TR21115C0 |  | PT-15 ; 2nd Fix, Gaseous Fire Suppression (TR RM) | 36d | 2012-05-01 | 2012-06-12 | T15TR09601C0 |  |  |  |  | 69.6d | 0d | MECHANICAL [2626.8 h]; Cost | 411 | 20001130 | T15TR21115C0 | PT | C |  | 15 | TR | ME | 211 | 15 | BILL 10 | B10 | S2 | 2F | R00 | ACF07 | 211 | 2n | MEP |  |  |  |  |
| T15TR08709C0 |  | PT-15 ; Ironmongery (TR RM) | 16d | 2012-05-22 | 2012-06-10 | T15TR08105C0 |  |  |  |  | 111.85d | 42.25d | IRONMONGERY [50 h]; IRONMONGERY [5 no]; Cost | 322 | 20001100 | T15TR08709C0 | PT | C | 08 | 15 | TR | DO | 087 | 09 | BILL 10 | B10 | S2 | IM | R00 | ACF06 | 087 |  |  |  |  |  |  |
| T15TR01006C0 |  | PT-15 ; 2nd, Ceiling Inspection by Consultants (TR RM) | 12d | 2012-05-29 | 2012-06-12 | T15TR23009C0, T15TR23011C0, T15TR23013C0, T15TR26007C0, T15TR09501C0 |  |  |  |  | 69.6d | 0d | Labor General [0.6 h]; Cost |  |  | T15TR01006C0 | PT | C |  | 15 | TR | ME | 010 | 06 | BILL 10 | B10 | S2 | CI | R00 | ACF07 | 010 | 2n | MEP |  |  |  |  |
| T15TR09503C0 |  | PT-15 ; Ceiling closure (TR RM) | 14d | 2012-06-12 | 2012-06-30 | T15TR01006C0, T15TR09501C0, T15TR21115C0, T15TR26005C0, T15TR26007C0, T15TR26026C0, T15TR26027C0, T15TR23074C0, T15TR23003C0, T15TR26076C0, T15TR26015C0, T15TR26013C0, T15TR26019C0, T15TR27030C0, T15TR23023C0 |  |  |  |  | 69.6d | 0d | ASSORTED CEILING FINISH [33.21 h]; CEILING GYPSUM [8.2 h]; ASSORTED CEILING FINISH [54 m2]; CEILING GYPSUM [25 m2]; Cost | 337 | 20001080 | T15TR09503C0 | PT | C |  | 15 | TR | CE | 095 | 03 | BILL 10 | B10 | S2 | 02 | R00 | ACF06 | 095 |  |  |  |  |  |  |
| T15TR09907C0 |  | PT-15 ; Ceiling - Final paint (TR RM) | 9.75d | 2012-06-30 | 2012-07-11 | T15TR09905C0, T15TR09503C0 |  |  |  |  | 86.1d | 16.5d | CEILING PAINT [2 h]; CEILING PAINT [1 m2]; Cost | 363 | 1314 | T15TR09907C0 | PT | C |  | 15 | TR | PA | 099 | 07 | BILL 10 | B10 | S2 | 02 | R00 | ACF06 | 099 |  |  |  |  |  |  |
| T15TR26017C0 |  | PT-15 ; Final Fix, Inst of Switch/Sockets (TR RM) | 12d | 2012-06-30 | 2012-07-14 | T15TR09901C0, T15TR09503C0 |  |  |  |  | 69.6d | 0d | ELECTRICAL [362.4 h]; Cost |  |  | T15TR26017C0 | PT | C |  | 15 | TR | ME | 260 | 17 | BILL 10 | B10 | S2 | FF | R00 | ACF07 | 260 | FF | MEP |  |  |  |  |
| T15TR01802C0 |  | PT-15 ; MEP de-snag, FIREM sign-off | 14.25d | 2012-07-14 | 2012-07-30 | T15TR26017C0, T15TR23074C0, T15TR23003C0, T15TR26076C0, T15TR26013C0, T15TR26015C0, T15TR26019C0, T15TR27030C0, T15TR27002C0 |  |  |  |  | 69.6d | 0d | TESTING & COMMISSIONING [510 h]; Cost |  |  | S05CO01851C0 | PT | C |  | 15 | TR | SC | 018 | 53 | BILL 10 | B10 | S2 | 01 | R00 | ACF07 | 018 |  |  |  |  |  |  |
| T15TR01801C0 |  | PT-15 ; Touch-up & Clean / JV inspection /CIR /De-snag | 22.75d | 2012-07-30 | 2012-08-28 | T15TR01802C0, T15TR08709C0, T15TR09601C0, T15TR09903C0, T15TR09907C0, T15TR09503C0 |  |  |  |  | 69.6d | 0d | TESTING & COMMISSIONING [128 h]; Cost | 396 |  | T15TR01851C0 | PT | C |  | 15 | TR | SC | 018 | 51 | BILL 10 | B10 | S2 | 02 | R00 | ACF07 | 018 |  |  |  |  |  |  |
| T15TR01803C0 |  | PT-15 ; Consultant's final de-snag inspection | 12d | 2012-08-28 | 2012-09-11 | T15TR01801C0 |  |  |  |  | 69.6d | 53.66d | Labor General [1 h]; Cost |  |  | CP3TS01803C0 | PT | C |  | 15 | TR | SC | 018 | 03 | BILL 10 | B10 | S1 | 03 | R00 | ACF07 | 018 |  |  |  |  |  |  |

| ID | WBS | Activity | Duration | Start | Finish | Predecessors | Complete | Remaining | Planned start | Planned finish | Total float | Free float | Resources | Cost | Actual cost | change id | P_811 | P_711 | CCAD BUILDING(SET) | CCAD PHASE(SET) | CCAD FLOOR(SET) | CCAD ZONE(SET) | CCAD WORK(SET) | CCAD SECTION(SET) | CCAD SERIAL No.(SET) | CCAD SUB ZONE MEP(SET) | CCAD CBS(SET) | CCAD BILL(SET) | CCAD HANDOVER(SET) | CCAD TAG(SET) | CCAD REV(SET) | CCADACF (SET) | CCAD CSA | CCAD SSCF | Act Selector % | Change Order # | NEW ACTIVITY ID | R3 Partitions | CCAD DIVISION(SET) | CCAD MEQ | R3 Finish |
| --- | --- | --- | --- | --- | --- | --- | --- | --- | --- | --- | --- | --- | --- | --- | --- | --- | --- | --- | --- | --- | --- | --- | --- | --- | --- | --- | --- | --- | --- | --- | --- | --- | --- | --- | --- | --- | --- | --- | --- | --- | --- |
|  | 04 | **Public Area ( Elev.Lobby & Corridors )** |  | 2011-08-02 | 2013-02-05 |  |  |  |  |  |  |  |  |  |  |  |  |  |  |  |  |  |  |  |  |  |  |  |  |  |  |  |  |  |  |  |  |  |  |  |  |
| T15PA23001C0 |  | PT-15 ; 1st Fix, Inst. of Supports for MEP (Public Area) | 53.88d | 2011-08-02 A | 2011-12-01 | T15CO07807C0 | 10% | 48.49d | 2011-08-25 | 2011-10-29 | 22.25d | 0d | MECHANICAL [800.4 h]; Cost [45150.4 AED] | 45,150.38 | 4,515.04 | S08PA23001C0 | 10 | 0 | PT | C | 15 | PA | ME | 230 | 01 | 1S | BILL 10 | B10 | S2 | 1F | R00 | ACF04 | MEP | 230 | M1F |  |  |  |  |  |  |
| T15PA09201C0 |  | PT-15 ; Metal Studs (Public Area) | 30d | 2011-09-05 A | 2011-12-11 | T15PA23001C0 SS+12d, TAFCI09202R02 FS+72d, T15PA23001C0 FF | 10% | 27d | 2011-11-01 | 2011-12-11 | 69.6d | 0d | PARTITIONS [5687 h]; PARTITIONS - Metal Studs [789 m]; Cost |  |  | S08PA09201C0 |  |  | PT | C | 15 | PA | PT | 092 | 01 |  | BILL 10 | B10 | S2 | 1F | R00 | ACF06 | GP | 092 | PMS | 313 | 944 | R3 |  |  |  |
| T15PA26001C0 |  | PT-15 ; 1st Fix, Inst of Trunking/Conduiting (Public Area) | 60d | 2011-12-01 | 2012-02-13 | T15CO07807C0, T15PA23001C0 |  |  |  |  | 22.25d | 0d | ELECTRICAL [4268.4 h]; Cost |  |  | S08PA26001C0 |  |  | PT | C | 15 | PA | ME | 260 | 01 | 1S | BILL 10 | B10 | S2 | 1F | R00 | ACF04 | MEP | 260 | M1F |  |  |  |  |  |  |
| T15PA09203C0 |  | PT-15 ; Partitions early wall & 1st face (Public Area) | 33d | 2011-12-12 | 2012-01-19 | T15PA09201C0 |  |  |  |  | 110.83d | 88.59d | PARTITIONS [789 m]; PARTITIONS [4449 h]; Cost |  |  | S08PA09203C0 |  |  | PT | C | 15 | PA | PT | 092 | 03 |  | BILL 10 | B10 | S2 | 2F | R00 | ACF06 | GP | 092 | P1F | 314 | 945 |  |  |  |  |
| T15PA26009C0 |  | PT-15 ; 2nd Fix, Inst of Wall conduites (Public Area) | 42d | 2011-12-12 | 2012-01-30 | T15PA09201C0 |  |  |  |  | 95.83d | 73.59d | ELECTRICAL [734.4 h]; Cost |  |  | S08PA26009C0 |  |  | PT | C | 15 | PA | ME | 260 | 09 | 2n | BILL 10 | B10 | S2 | 2F | R00 | ACF07 | MEP | 260 |  |  |  |  |  |  |  |
| T15PA27010C0 |  | PT-15 ; 1st Fix, Inst of Trunking for ELV system (Public Area) | 54d | 2011-12-13 | 2012-02-16 | T15CO07807C0, T15PA23001C0, T15PA26001C0 SS+9d |  |  |  |  | 22.25d | 0d | ELECTRICAL [3202.8 h]; Cost |  |  | S08PA27010C0 |  |  | PT | C | 15 | PA | ME | 270 | 10 | 1S | BILL 10 | B10 | S2 | 1F | R00 | ACF04 | MEP | 270 | M1F |  |  |  |  |  |  |
| T15PA26013C0 |  | PT-15 ; 1st Fix, Inst of Cable Tray (Public Area) | 48d | 2011-12-24 | 2012-02-20 | T15CO07807C0, T15PA23001C0, T15PA27010C0 SS+9d |  |  |  |  | 22.25d | 0d | ELECTRICAL [399.6 h]; Cost |  |  | S08PA26013C0 |  |  | PT | C | 15 | PA | ME | 260 | 13 | 1S | BILL 10 | B10 | S2 | 1F | R00 | ACF04 | MEP | 260 | M1F |  |  |  |  |  |  |
| T15PA22019C0 |  | PT-15 ; 1st Fix, Inst of Drainage pipe (ceiling) (Public Area) | 54d | 2012-01-04 | 2012-03-08 | T15PA23001C0, T15PA26013C0 SS+9d |  |  |  |  | 22.25d | 0d | PLUMBING [2326.8 h]; Cost |  |  | S08PA22019C0 |  |  | PT | C | 15 | PA | ME | 220 | 19 | 1S | BILL 10 | B10 | S2 | 1F | R00 | ACF04 | MEP | 220 | M1F |  |  |  |  |  |  |
| T15PA22005C0 |  | PT-15 ; 1st Fix, Inst of Water supply pipe (ceiling) (Public Area) | 60d | 2012-01-16 | 2012-03-27 | T15PA22019C0 SS+10d, T15PA23001C0 |  |  |  |  | 36.25d | 0d | PLUMBING [4548 h]; Cost |  |  | S08PA22005C0 |  |  | PT | C | 15 | PA | ME | 220 | 05 | 1S | BILL 10 | B10 | S2 | 1F | R00 | ACF04 | MEP | 220 | M1F |  |  |  |  |  |  |
| T15PA08103C0 |  | PT-15 ; Door Frames (Public Area) | 36d | 2012-01-30 | 2012-03-12 | T15PA09201C0, GNHE08101C0 FS+126d, T15P208103C0 SS+3d |  |  |  |  | 68.12d | 0d | ASSORTED DOORS [448 h]; Cost |  |  | S08PA08103C0 |  |  | PT | C | 15 | PA | DO | 081 | 03 |  | BILL 10 | B10 | S2 | DF | R00 | ACF06 |  | 081 |  | 316 | 947 |  | 08 |  |  |
| T15PA21111C0 |  | PT-15 ; 1st Fix, Inst of Sprinkler main pipe (Public Area) | 54d | 2012-01-30 | 2012-04-03 | T15PA22005C0 SS+12d, T15PA23001C0 |  |  |  |  | 36.25d | 0d | MECHANICAL [2402.4 h]; Cost |  |  | S08PA21111C0 |  |  | PT | C | 15 | PA | ME | 211 | 11 | 1S | BILL 10 | B10 | S2 | 1F | R00 | ACF04 | MEP | 211 | M1F |  |  |  |  |  |  |
| T15PA23017C0 |  | PT-15 ; 1st Fix, Inst of CHW pipe (Public Area) | 54d | 2012-02-16 | 2012-04-19 | T15PA21111C0 SS+14d, T15PA23001C0 |  |  |  |  | 36.25d | 0d | MECHANICAL [2467.2 h]; Cost |  |  | S08PA23017C0 |  |  | PT | C | 15 | PA | ME | 230 | 17 | 1S | BILL 10 | B10 | S2 | 1F | R00 | ACF04 | MEP | 230 | M1F |  |  |  |  |  |  |
| T15PA27001C0 |  | PT-15 ; 1st Fix, Wiring/ Cabling work (Public Area) | 48d | 2012-02-20 | 2012-04-16 | T15PA26001C0, T15PA26013C0, T15PA27010C0 |  |  |  |  | 103.25d | 81d | ELECTRICAL [392.4 h]; Cost |  |  | S08PA27001C0 |  |  | PT | C | 15 | PA | ME | 270 | 01 | 1S | BILL 10 | B10 | S2 | 1F | R00 | ACF04 | MEP | 270 | M1F |  |  |  |  |  |  |
| T15PA23023C0 |  | PT-15 ; 1st Fix, Inst of Main Ducting (Public Area) | 60d | 2012-02-28 | 2012-05-08 | T15PA23001C0, T15PA23017C0 SS+10d |  |  |  |  | 36.25d | 0d | MECHANICAL [8022 h]; Cost |  |  | S08PA23023C0 |  |  | PT | C | 15 | PA | ME | 230 | 23 | 1S | BILL 10 | B10 | S2 | 1F | R00 | ACF04 | MEP | 230 | M1F |  |  |  |  |  |  |
| T15PA22011C0 |  | PT-15 ; 2nd Fix, Drainage/Water pipe (wall) (Public Area) | 42d | 2012-03-08 | 2012-04-26 | T15PA22019C0 |  |  |  |  | 22.25d | 0d | PLUMBING [1378.8 h]; Cost |  |  | S08PA22011C0 |  |  | PT | C | 15 | PA | ME | 220 | 11 | 2n | BILL 10 | B10 | S2 | 2F | R00 | ACF07 | MEP | 220 |  |  |  |  |  |  |  |
| T15PA21117C0 |  | PT-15 ; 1st Fix, Inst of Sprinkler branch pipe (Public Area) | 48d | 2012-04-03 | 2012-05-29 | T15PA09201C0, T15PA21111C0 |  |  |  |  | 66.25d | 44d | MECHANICAL [561.6 h]; Cost |  |  | S08PA21117C0 |  |  | PT | C | 15 | PA | ME | 211 | 17 | 1S | BILL 10 | B10 | S2 | 1F | R00 | ACF04 | MEP | 211 | M1F |  |  |  |  |  |  |
| T15PA23009C0 |  | PT-15 ; 2nd Fix, Inst of VAV'S CHW connection (Public Area) | 42d | 2012-04-19 | 2012-06-07 | T15PA23017C0 |  |  |  |  | 58.25d | 36d | MECHANICAL [1450.8 h]; Cost |  |  | S08PA23009C0 |  |  | PT | C | 15 | PA | ME | 230 | 09 | 2n | BILL 10 | B10 | S2 | 2F | R00 | ACF07 | MEP | 230 |  |  |  |  |  |  |  |
| T15PA01005C0 |  | PT-15 ; 2nd, Wall Inspection by Consultant (Public Area) | 6d | 2012-04-26 | 2012-05-03 | T15PA22011C0, T15PA26009C0 |  |  |  |  | 22.25d | 0d | Labor General [0.6 h]; Cost |  |  | S08PA01005C0 |  |  | PT | C | 15 | PA | ME | 010 | 05 | 2n | BILL 10 | B10 | S2 | WI | R00 | ACF07 | MEP | 010 |  |  |  |  |  |  |  |
| T15PA09205C0 |  | PT-15 ; Partitions Closing (Public Area) | 36d | 2012-05-03 | 2012-06-14 | T15PA01005C0, T15PA09203C0, T15PA22005C0, T15PA22019C0, TAFOA09214C1 FF, TAFCI22011R02 FS+72d, T15PA08103C0 FF |  |  |  |  | 22.25d | 0d | PARTITIONS [789 m]; PARTITIONS [5697 h]; Cost |  |  | S08PA09205C0 |  |  | PT | C | 15 | PA | PT | 092 | 05 |  | BILL 10 | B10 | S2 | FF | R00 | ACF06 | GP | 092 | P2F | 315 | 946 | R3 |  |  |  |
| T15PA23008C0 |  | PT-15 ; 1st Fix, Inst of VCD's/FD's (Public Area) | 48d | 2012-05-08 | 2012-07-04 | T15PA23023C0 |  |  |  |  | 36.25d | 14d | MECHANICAL [1753.2 h]; Cost |  |  | S08PA23008C0 |  |  | PT | C | 15 | PA | ME | 230 | 08 | 1S | BILL 10 | B10 | S2 | 1F | R00 | ACF04 | MEP | 230 | M1F |  |  |  |  |  |  |
| T15PA23015C0 |  | PT-15 ; 2nd Fix, Insulation of CHW pipe & Duct (Public Area) | 48d | 2012-05-08 | 2012-07-04 | T15PA23017C0, T15PA23023C0 |  |  |  |  | 36.25d | 14d | MECHANICAL [3064.8 h]; Cost |  |  | S08PA23015C0 |  |  | PT | C | 15 | PA | ME | 230 | 15 | 2n | BILL 10 | B10 | S2 | 2F | R00 | ACF07 | MEP | 230 |  |  |  |  |  |  |  |
| T15PA09901C0 |  | PT-15 ; Wall Prime & 1st coat (Public Area) | 30d | 2012-06-14 | 2012-07-21 | T15PA09205C0 |  |  |  |  | 22.25d | 0d | WALL PAINT [866 h]; WALL PAINT [1080 m2]; Cost |  |  | S08PA09901C0 |  |  | PT | C | 15 | PA | PA | 099 | 01 |  | BILL 10 | B10 | S2 | 01 | R00 | ACF06 |  | 099 |  | 328 | 956 |  |  |  |  |
| T15PA26005C0 |  | PT-15 ; 2nd Fix, Wiring for Power/Lighting/Emergency (Public Area) | 42d | 2012-06-14 | 2012-08-04 | T15PA09205C0 |  |  |  |  | 52.25d | 0d | ELECTRICAL [392.4 h]; Cost |  |  | S08PA26005C0 |  |  | PT | C | 15 | PA | ME | 260 | 05 | 2n | BILL 10 | B10 | S2 | 2F | R00 | ACF07 | MEP | 260 |  |  |  |  |  |  |  |
| T15PA26007C0 |  | PT-15 ; 2nd Fix, Cable Pulling (Public Area) | 48d | 2012-06-14 | 2012-08-11 | T15PA26013C0, T15PA09205C0 |  |  |  |  | 88.25d | 66d | ELECTRICAL [2683.2 h]; Cost |  |  | S08PA26007C0 |  |  | PT | C | 15 | PA | ME | 260 | 07 | 2n | BILL 10 | B10 | S2 | 2F | R00 | ACF07 | MEP | 260 |  |  |  |  |  |  |  |
| T15PA26011C0 |  | PT-15 ; 2nd Fix, Inst of Equipment (DB) (Public Area) | 54d | 2012-06-14 | 2012-08-18 | T15PA09205C0 |  |  |  |  | 76.54d | 24d | ELECTRICAL [878.4 h]; Cost |  |  | S08PA26011C0 |  |  | PT | C | 15 | PA | ME | 260 | 11 | 2n | BILL 10 | B10 | S2 | 2F | R00 | ACF04 | MEP | 260 |  |  |  |  |  | E |  |
| T15PA26053C0 |  | PT-15 ; 2nd Fix, Wiring / Cabling (Public Area) | 42d | 2012-06-14 | 2012-08-04 | T15PA09203C0, T15PA09205C0 |  |  |  |  | 34.25d | 12d | ELECTRICAL [392.4 h]; Cost |  |  | S08PA26053C0 |  |  | PT | C | 15 | PA | ME | 260 | 53 | 2n | BILL 10 | B10 | S2 | 2F | R00 | ACF07 | MEP | 260 |  | 389 | 977 |  |  |  |  |
| T15PA05501C0 |  | PT-15 ; Handrails & balustrade (Public Area) | 36d | 2012-07-21 | 2012-09-03 | T15PA09901C0, TAFT105509C0, TAFT805509C0 |  |  |  |  | 34.54d | 0d | SECONDARY STEEL [356 h]; Cost |  |  | S08PA05501C0 |  |  | PT | C | 15 | PA | SW | 055 | 01 |  | BILL 10 | B10 | S2 | 01 | R00 | ACF03 |  | a |  |  |  |  |  |  |  |
| T15PA09501C0 |  | PT-15 ; Ceiling Grid and Service Tile (Public Area) | 24d | 2012-07-21 | 2012-08-18 | T15PA09205C0 SS+15d, T15PA21117C0, T15PA23008C0, T15PA23009C0, T15PA23015C0, T15PA27001C0, TAFCI22022R02 FS+72d, T15PA26053C0 FF, T15PA09901C0 |  |  |  |  | 22.25d | 0d | CEILING GRID FOR GYPSUM [7543.63 h]; CEILING GRID FOR GYPSUM [645.55 m2]; Cost |  |  | S08PA09501C0 |  |  | PT | C | 15 | PA | CE | 095 | 01 |  | BILL 10 | B10 | S2 | 01 | R00 | ACF06 |  | 095 |  | 323 | 952 |  |  |  | R3 |
| T15PA26015C0 |  | PT-15 ; Final Fix, Termination & Gladding of Cables (Public Area) | 36d | 2012-08-04 | 2012-09-17 | T15PA26005C0 |  |  |  |  | 52.25d | 30d | ELECTRICAL [148.8 h]; Cost |  |  | S08PA26015C0 |  |  | PT | C | 15 | PA | ME | 260 | 15 | FF | BILL 10 | B10 | S2 | FF | R00 | ACF07 | MEP | 260 |  |  |  |  |  |  |  |
| T15PA09601C0 |  | PT-15 ; Flooring (Rubber & etc) (Public Area) | 30d | 2012-08-18 | 2012-09-24 | TAFCI22022R02 FS+72d, T15PA09501C0 |  |  |  |  | 46.54d | 12d | RUBBER FLOOR [48 h]; RUBBER FLOOR [120 m2]; Cost |  |  | S08PA09601C0 |  |  | PT | C | 15 | PA | FF | 096 | 01 |  | BILL 10 | B10 | S2 | 03 | R00 | ACF06 |  | RF |  | 326 | 955 |  |  |  | R3 |
| T15PA09905C0 |  | PT-15 ; Ceiling Prime & 1st coat (Public Area) | 30d | 2012-08-18 | 2012-09-24 | T15PA09501C0 |  |  |  |  | 76.54d | 0d | CEILING PAINT [55 h]; CEILING PAINT [67 m2]; Cost |  |  | S08PA09905C0 |  |  | PT | C | 15 | PA | PA | 099 | 05 |  | BILL 10 | B10 | S2 | 01 | R00 | ACF06 |  | 099 |  | 330 | 958 |  |  |  |  |
| T15PA21115C0 |  | PT-15 ; 2nd Fix, Inst of Sprinkler droppers (Public Area) | 42d | 2012-08-18 | 2012-10-08 | T15PA09501C0 |  |  |  |  | 34.25d | 0d | MECHANICAL [1602 h]; Cost |  |  | S08PA21115C0 |  |  | PT | C | 15 | PA | ME | 211 | 15 | 2n | BILL 10 | B10 | S2 | 2F | R00 | ACF07 | MEP | 211 |  |  |  |  |  |  |  |
| T15PA23021C0 |  | PT-15 ; 2nd Fix, Inst of Flexible Duct & Plenum boxes (Public Area) | 42d | 2012-08-18 | 2012-10-08 | T15PA09205C0, T15PA09501C0 |  |  |  |  | 34.25d | 0d | MECHANICAL [30 h]; Cost |  |  | S08PA23021C0 |  |  | PT | C | 15 | PA | ME | 230 | 21 | 2n | BILL 10 | B10 | S2 | 2F | R00 | ACF07 | MEP | 230 |  |  |  |  |  |  |  |
| T15PA26017C0 |  | PT-15 ; Final Fix, Inst of Ceiling rose (Public Area) | 36d | 2012-08-18 | 2012-10-01 | T15PA09501C0 |  |  |  |  | 22.25d | 0d | ELECTRICAL [61.2 h]; Cost |  |  | S08PA26017C0 |  |  | PT | C | 15 | PA | ME | 260 | 17 | FF | BILL 10 | B10 | S2 | FF | R00 | ACF07 | MEP | 260 |  |  |  |  |  |  |  |
| T15PA27002C0 |  | PT-15 ; 2nd Fix, Wiring Droppers (Public Area) | 42d | 2012-08-18 | 2012-10-08 | T15PA09501C0 |  |  |  |  | 28.25d | 0d | ELECTRICAL [392.4 h]; Cost |  |  | S08PA27002C0 |  |  | PT | C | 15 | PA | ME | 270 | 02 | 2n | BILL 10 | B10 | S2 | 2F | R00 | ACF07 | MEP | 270 |  |  |  |  |  |  |  |
| T15PA27020C0 |  | PT-15 ; 2nd Fix, Inst of ELV Equipment (Panels) (Public Area) | 24d | 2012-08-18 | 2012-09-17 | T15PA09205C0, T15PA09501C0 |  |  |  |  | 52.54d | 0d | ELECTRICAL [1819.2 h]; Cost |  |  | S08PA27020C0 |  |  | PT | C | 15 | PA | ME | 270 | 20 | 2n | BILL 10 | B10 | S2 | 2F | R00 | ACF04 | MEP | 270 |  |  |  |  |  | E |  |
| T15PA21113C0 |  | PT-15 ; Final Fix, Inst of Sprinklers head/ Extinguisher (Public Area) | 36d | 2012-08-27 | 2012-10-08 | T15PA09501C0, T15PA21115C0 SS+6d |  |  |  |  | 34.25d | 12d | MECHANICAL [234 h]; Cost |  |  | S08PA21113C0 |  |  | PT | C | 15 | PA | ME | 211 | 13 | FF | BILL 10 | B10 | S2 | FF | R00 | ACF07 | MEP | 211 |  |  |  |  |  |  |  |
| T15PA23019C0 |  | PT-15 ; Final Fix, Inst of Grilles & Diffusers (Public Area) | 36d | 2012-08-27 | 2012-10-08 | T15PA09501C0, T15PA23021C0 SS+6d |  |  |  |  | 34.25d | 12d | MECHANICAL [1498.8 h]; Cost |  |  | S08PA23019C0 |  |  | PT | C | 15 | PA | ME | 230 | 19 | FF | BILL 10 | B10 | S2 | FF | R00 | ACF07 | MEP | 230 |  |  |  |  |  |  |  |
| T15PA26003C0 |  | PT-15 ; Final Fix, Inst of Light fittings (Public Area) | 48d | 2012-08-27 | 2012-10-22 | T15PA09501C0, T15PA26017C0 SS+6d |  |  |  |  | 22.25d | 0d | ELECTRICAL [7815.6 h]; Cost |  |  | S08PA26003C0 |  |  | PT | C | 15 | PA | ME | 260 | 03 | FF | BILL 10 | B10 | S2 | FF | R00 | ACF07 | MEP | 260 |  |  |  |  |  |  |  |
| T15PA27030C0 |  | PT-15 ; Final Fix, Inst of ELV devise (Detector/Speaker) (Public Area) | 42d | 2012-08-27 | 2012-10-15 | T15PA09501C0, T15PA27002C0 SS+6d |  |  |  |  | 28.25d | 6d | ELECTRICAL [3571.2 h]; Cost |  |  | S08PA27030C0 |  |  | PT | C | 15 | PA | ME | 270 | 30 | FF | BILL 10 | B10 | S2 | FF | R00 | ACF07 | MEP | 270 |  |  |  |  |  |  |  |
| T15PA09602C0 |  | PT-15 ; Flooring (Stone) (Public Area) | 30d | 2012-09-03 | 2012-10-08 | TAFCI22022R02 FS+72d, T15PA09501C0, T15PA05501C0 |  |  |  |  | 34.54d | 0d | STONE FLOOR [27 m2]; STONE FLOOR [24 h]; Cost |  |  | S08PA09601C0 |  |  | PT | C | 15 | PA | FF | 096 | 01 |  | BILL 10 | B10 | S2 | 09 | R00 | ACF06 |  | ST |  | 326 | 955 |  |  |  | R3 |
| T15PA09702C0 |  | PT-15 ; Ceramic Wall Tiles (Public Area) | 6d | 2012-09-17 | 2012-09-24 | T15PA26011C0, T15PA27020C0, TVT0114211C0, TVT0214211C0, TVT0714211C0, TVT3114211C0, TVT3214255C0, TVT3314245C0, T15PA09501C0 |  |  |  |  | 106.54d | 84.29d | ASSORTED WALL FINISH [1049 h]; ASSORTED WALL FINISH [201 m2]; Cost |  |  | S08PA09701C0 |  |  | PT | C | 15 | PA | WF | 097 | 01 |  | BILL 10 | B10 | S2 | 04 | R00 | ACF06 |  | 097 |  | 105 | 1002 |  |  |  |  |
| T15PA09903C0 |  | PT-15 ; Wall Final Paint (Public Area) | 30d | 2012-09-24 | 2012-10-31 | T15PA09901C0, T15PA09905C0, T15PA09501C0 |  |  |  |  | 76.54d | 48d | WALL PAINT [467 h]; WALL PAINT [581 m2]; Cost |  |  | S08PA09903C0 |  |  | PT | C | 15 | PA | PA | 099 | 03 |  | BILL 10 | B10 | S2 | 02 | R00 | ACF06 |  | 099 |  | 329 | 957 |  |  |  |  |
| T15PA08107C0 |  | PT-15 ; Doors (Public Area) | 30d | 2012-10-08 | 2012-11-14 | T15PA08103C0, T15PA09501C0, T15PA09601C0, T15PA09901C0, T15PA09602C0 |  |  |  |  | 46.54d | 0d | ASSORTED DOORS [900 h]; ASSORTED DOORS [90 no]; Cost |  |  | S08PA08107C0 |  |  | PT | C | 15 | PA | DO | 081 | 07 |  | BILL 10 | B10 | S2 | DR | R00 | ACF06 |  | 081 |  | 317 | 948 |  | 08 |  |  |
| T15PA09701C0 |  | PT-15 ; Wall finishes (ST, WD, WC) (Public Area) | 36d | 2012-10-08 | 2012-11-22 | T15PA26011C0, T15PA27020C0, TVT0114211C0, TVT0214211C0, TVT0714211C0, TVT3114211C0, TVT3214255C0, TVT3314245C0, TAFCI22022R02 FS+170d, T15PA09501C0, T15PA09601C0, T15PA09602C0 |  |  |  |  | 34.54d | 0d | ASSORTED WALL FINISH [764 h]; ASSORTED WALL FINISH [878 m2]; Cost |  |  | S08PA09701C0 |  |  | PT | C | 15 | PA | WF | 097 | 01 |  | BILL 10 | B10 | S2 | 01 | R00 | ACF06 |  | 097 |  | 105 | 1002 |  |  |  |  |
| T15PA01006C0 |  | PT-15 ; 2nd, Ceiling Inspection by Consultants (Public Area) | 6d | 2012-10-22 | 2012-10-31 | T15PA21115C0, T15PA23009C0, T15PA23015C0, T15PA27002C0, T15PA09501C0, T15PA21113C0, T15PA23019C0, T15PA26015C0, T15PA26017C0, T15PA26003C0, T15PA27030C0 |  |  |  |  | 22.25d | 0d | Labor General [0.6 h]; Cost |  |  | S08PA01006C0 |  |  | PT | C | 15 | PA | ME | 010 | 06 | 2n | BILL 10 | B10 | S2 | CI | R00 | ACF07 | MEP | 010 |  |  |  |  |  |  |  |
| T15PA09503C0 |  | PT-15 ; Ceiling closure - ACT/Gypsum (Public Area) | 24.75d | 2012-10-31 | 2012-12-01 | T15PA01006C0, T15PA21115C0, T15PA26005C0, T15PA27001C0, T15PA27002C0, TAFOA09513C1 FF, T15PA23021C0, T15PA26007C0 |  |  |  |  | 22.25d | 0d | ASSORTED CEILING FINISH [851.77 h]; CEILING GYPSUM [211.76 h]; ASSORTED CEILING FINISH [1385 m2]; CEILING GYPSUM [646 m2]; Cost |  |  | S08PA09503C0 |  |  | PT | C | 15 | PA | CE | 095 | 03 |  | BILL 10 | B10 | S2 | 02 | R00 | ACF06 |  | 095 |  | 324 | 953 |  |  |  | R3 |
| T15PA08709C0 |  | PT-15 ; Ironmongery (Public Area) | 18d | 2012-11-14 | 2012-12-08 | T15PA08107C0 |  |  |  |  | 46.54d | 24.29d | IRONMONGERY [1280 h]; IRONMONGERY [128 no]; Cost |  |  | S08PA08709C0 |  |  | PT | C | 15 | PA | DO | 087 | 09 |  | BILL 10 | B10 | S2 | IM | R00 | ACF06 |  | 087 |  | 322 | 951 |  | 08 |  |  |
| T15PA11001C0 |  | PT-15 ; Wall Protection (WP, CG, WG, FCG) (Public Area) | 24d | 2012-11-22 | 2012-12-22 | T15PA09701C0, T15PA09903C0 SS |  |  |  |  | 34.54d | 12.29d | FF&E [42 h]; Cost |  |  | S08PA11001C0 |  |  | PT | C | 15 | PA | WF | 110 | 01 |  | BILL 10 | B10 | S2 | 03 | R00 | ACF08 |  | b |  | 326 | 1001 |  |  |  |  |
| T15PA11009C0 |  | PT-15 ; Signage (Public Area) | 15d | 2012-11-22 | 2012-12-11 | T15PA09701C0 |  |  |  |  | 43.54d | 21.29d | SIGNAGES [173 h]; SIGNAGES [172.58 no]; Cost |  |  | S08PA11009C0 |  |  | PT | C | 15 | PA | SA | 110 | 09 |  | BILL 10 | B10 | S2 | 09 | R00 | ACF08 |  | c |  | 322 | 951 |  | 08 |  |  |
| T15PA09907C0 |  | PT-15 ; Ceiling Final paint (Public Area) | 18d | 2012-12-01 | 2012-12-23 | T15PA09601C0, T15PA09905C0, T15PA09602C0, T15PA09503C0 |  |  |  |  | 33.79d | 11.54d | CEILING PAINT [29 h]; CEILING PAINT [36 m2]; Cost |  |  | S08PA09907C0 |  |  | PT | C | 15 | PA | PA | 099 | 07 |  | BILL 10 | B10 | S2 | 02 | R00 | ACF06 |  | 099 |  | 331 | 959 |  |  |  |  |
| T15PA26019C0 |  | PT-15 ; Final Fix, Inst of Switch/Sockets (Public Area) | 18d | 2012-12-01 | 2012-12-23 | T15PA09901C0, T15PA09503C0 |  |  |  |  | 22.25d | 0d | ELECTRICAL [362.4 h]; Cost |  |  | S08PA26019C0 |  |  | PT | C | 15 | PA | ME | 260 | 19 | FF | BILL 10 | B10 | S2 | FF | R00 | ACF07 | MEP | 260 |  |  |  |  |  |  |  |

| ID | WBS | Activity | Duration | Start | Finish | Predecessors | Complete | Remaining | Planned start | Planned finish | Total float | Free float | Resources | Cost | Actual cost | change id | CCAD BUILDING(SET) | CCAD PHASE(SET) | CCAD FLOOR(SET) | CCAD ZONE(SET) | CCAD WORK(SET) | CCAD SECTION(SET) | CCAD SERIAL No.(SET) | CCAD CBS(SET) | CCAD BILL(SET) | CCAD HANDOVER(SET) | CCAD TAG(SET) | CCAD REV(SET) | CCADACF (SET) | CCAD SSCF | RENZ % COMPLETE | Phase | Area/ Department | Grids | Are | Weight & Nos | Process | Levels | Claimed This Month | CCAD CSA | P_811 | P_711 | U% | CCAD SUB ZONE MEP(SET) | Act Selector % | Change Order # | NEW ACTIVITY ID | CCAD DIVISION(SET) | CCAD MEQ |
| --- | --- | --- | --- | --- | --- | --- | --- | --- | --- | --- | --- | --- | --- | --- | --- | --- | --- | --- | --- | --- | --- | --- | --- | --- | --- | --- | --- | --- | --- | --- | --- | --- | --- | --- | --- | --- | --- | --- | --- | --- | --- | --- | --- | --- | --- | --- | --- | --- | --- |
|  | 10 | **Precommissioning Tesing & snagging (Public Area)** |  | 2012-12-23 | 2013-02-05 |  |  |  |  |  |  |  |  |  |  |  |  |  |  |  |  |  |  |  |  |  |  |  |  |  |  |  |  |  |  |  |  |  |  |  |  |  |  |  |  |  |  |  |  |
| T15TS01805C0 |  | PT-15 ; MEP de-snag, FIREM sign-off | 11.54d | 2012-12-23 | 2013-01-06 | T15PA26015C0, T15PA21113C0, T15PA23019C0, T15PA26017C0, T15PA26003C0, T15PA27030C0, T15PA26019C0 |  |  |  |  | 22.25d | 0d | TESTING & COMMISSIONING [510 h]; Cost |  |  | T15TS01801C0 | PT | C | 15 | TS | SC | 018 | 01 | BILL 10 | B10 | S2 | 01 | R00 | ACF07 | 018 |  |  |  |  |  |  |  |  |  |  |  |  |  |  |  |  |  |  |  |
| T15TS01808C0 |  | PT-15 ; Touch-up & Clean / JV inspection /CIR /De-snag | 17.88d | 2013-01-06 | 2013-01-28 | T15PA05501C0, T15PA08709C0, T15PA09601C0, T15PA09701C0, T15PA09903C0, T15PA09907C0, T15PA11001C0, T15PA11009C0, T15TS01805C0, T15PA09602C0, T15PA09702C0, T15PA09503C0 |  |  |  |  | 22.25d | 0d | TESTING & COMMISSIONING [128 h]; Cost |  |  | T15TS01802C0 | PT | C | 15 | TS | SC | 018 | 02 | BILL 10 | B10 | S2 | 02 | R00 | ACF07 | 018 |  |  |  |  |  |  |  |  |  |  |  |  |  |  |  |  |  |  |  |
| T15TS01811C0 |  | PT-15 ; Consultant's final de-snag inspection | 7d | 2013-01-28 | 2013-02-05 | T15TS01808C0 |  |  |  |  | 22.25d | 13.24d | Labor General [1 h]; Cost |  |  | T15TS01803C0 | PT | C | 15 | TS | SC | 018 | 03 | BILL 10 | B10 | S2 | 03 | R00 | ACF07 | 018 |  |  |  |  |  |  |  |  |  |  |  |  |  |  |  |  |  |  |  |
|  | 16 | **Level 16** |  | 2011-03-02 | 2013-02-20 |  |  |  |  |  |  |  |  |  |  |  |  |  |  |  |  |  |  |  |  |  |  |  |  |  |  |  |  |  |  |  |  |  |  |  |  |  |  |  |  |  |  |  |  |
|  | 01 | **Structure & Envelopment** |  | 2011-03-02 | 2012-06-13 |  |  |  |  |  |  |  |  |  |  |  |  |  |  |  |  |  |  |  |  |  |  |  |  |  |  |  |  |  |  |  |  |  |  |  |  |  |  |  |  |  |  |  |  |
| T16SA03301C0 |  | PT-16 ; Corewall Concrete (Zone SA) | 3d | 2011-03-02 A | 2011-03-12 A | T15SA03301C0 | 100% |  | 2011-03-01 | 2011-03-05 |  |  | CONCRETE [6280 h]; CONCRETE [158 m3]; Cost |  |  | T16SA03301C0 | PT | C | 16 | SA | CT | 033 | 01 | BILL 10 | B10 | S2 | 04 | R00 | ACF03 | 033 | 100 | Z2 | PA | TRUS | D | A10 | EREC | 10FLR |  |  |  |  |  |  |  |  |  |  |  |
| T16SB03303C0 |  | PT-16 ; Corewall Concrete (Zone SB) | 3d | 2011-03-21 A | 2011-03-27 A | T15SB03303C0 | 100% |  | 2011-03-16 | 2011-03-19 |  |  | CONCRETE [6280 h]; CONCRETE [158 m3]; Cost |  |  | T16SB03303C0 | PT | C | 16 | SB | CT | 033 | 03 | BILL 10 | B10 | S2 | 04 | R00 | ACF03 | 033 | 100 | Z2 | PA | TRUS | D | A10 | EREC | 10FLR |  |  |  |  |  |  |  |  |  |  |  |
| T16CO05101C0 |  | PT-16 ; Erection of Structural Steel of 16 th Floor (Common Zone) | 4.63d | 2011-06-15 A | 2011-06-20 A | T15CO05103C0, T16SA03301C0, T16SB03303C0 | 100% |  |  |  |  |  | STRUCTURAL STEEL [10518 h]; STRUCTURAL STEEL [344 T(Fe)]; Cost |  |  | T16CO05101C0 | PT | C | 16 | CO | ST | 051 | 01 | BILL 10 | B10 | S2 | 01 | R00 | ACF03 | 051 |  | Z2 | PA | 10TH | E | A12A | EREC | 11FLR | 4173904.3 | ST |  |  |  |  |  |  |  |  |  |
| T16CO05103C0 |  | PT-16 ; Alignment & welding of 16th Floor (Common Zone) | 3d | 2011-06-20 A | 2011-06-23 A | T16CO05101C0 | 100% |  |  |  |  |  | STRUCTURAL STEEL [1152 h]; Cost |  |  | T16CO05103C0 | PT | C | 16 | CO | ST | 051 | 03 | BILL 10 | B10 | S2 | 02 | R00 | ACF03 | 051 |  | Z2 | PA | 10TH | E | A12A | EREC | 11FLR | 463767.15 | ST |  |  |  |  |  |  |  |  |  |
| T16CO05305C0 |  | PT-16 ; Metal Decking 16 FLR (Common Zone) | 12d | 2011-07-10 A | 2011-07-19 A | T16CO05103C0, T17CO05101C0 | 100% |  | 2011-06-30 | 2011-07-13 |  |  | METAL DECKING [2760 h]; METAL DECKING [3493 m2]; Cost |  |  | T16CO05305C0 | PT | C | 16 | CO | ST | 053 | 05 | BILL 10 | B10 | S2 | 03 | R00 | ACF03 | 053 |  | Z2 | PA | 10TH | E | A12A | MDEC | 11FLR |  | ST |  |  |  |  |  |  |  |  |  |
| T16CO03399C0 |  | PT-16 ; Concrete on Metal Decking 16 FLR (Common Zone) | 10d | 2011-08-10 A | 2011-10-01 | T16CO05305C0 | 95% | 0.5d | 2011-07-31 | 2011-08-10 | 21.79d | 0d | CONCRETE [23776 h]; CONCRETE [598 m3]; Cost |  |  | T16CO05335C0 | PT | C | 16 | CO | CT | 033 | 99 | BILL 10 | B10 | S2 | 08 | R00 | ACF03 | 033 |  | Z2 | PA | 10TH | E | A12A | MDEC | 11FLR |  |  | 90 | 0 | 95 |  |  |  |  |  |  |
| T16CO07807C0 |  | PT-16 ; Cementitious Fire proofing Lvl 16 (Common Zone) | 12d | 2011-09-05 A | 2011-10-02 | T17CO03399C0 | 90% | 1.2d | 2011-09-03 | 2011-09-15 | 15.94d | 0d | CEMENTITIOUS FIREPROOFING [3066 h]; CEMENTITIOUS FIREPROOFING [6132 m2]; Cost |  |  | T16CO07807C0 | PT | C | 16 | CO | ST | 078 | 07 | BILL 10 | B10 | S2 | 04 | R00 | ACF03 | 078 |  | Z2 | PA | 10TH | E | A12A | FIRE | 11FLR |  | ST |  |  | 90 |  |  |  |  |  |  |
| T16CO04415C0 |  | PT-16 ; SG Catwalk Installation (Common Zone) | 52d | 2012-03-20 | 2012-05-20 | TEXCO04407C0 SS+14d |  |  |  |  | 34.02d | 0d | Labor General [4687.6 h]; Cost |  |  | I05CO04411C0 | PT | C | 16 | CO | FA | 044 | 11 | BILL 10 | B10 | S2 | SG | R00 | ACF05 | 044 |  |  |  |  |  |  |  |  |  | FA |  |  |  |  |  |  |  |  |  |
| T16CO04403C0 |  | PT-16 ; C2 Bracket (Common Zone) | 30d | 2012-04-24 | 2012-05-28 | T16CO07807C0, T17CO04403C0 SS, TEXCO04405C0 |  |  |  |  | 9d | 0d | FACADE CURTAIN WALL 2 [522.3 h]; Cost |  |  | T16CO04403C0 | PT | C | 16 | CO | FA | 044 | 03 | BILL 10 | B10 | S2 | FC2 | R00 | ACF05 | 044 |  |  |  |  |  |  |  |  |  | FA |  |  |  |  |  |  |  |  |  |
| T16CO04405C0 |  | PT-16 ; C2 Transom & Mullion (Common Zone) | 30d | 2012-05-10 | 2012-06-13 | T16CO04403C0 SS+14d |  |  |  |  | 9d | 0d | FACADE CURTAIN WALL 2 [2088.7 h]; Cost |  |  | T16CO04405C0 | PT | C | 16 | CO | FA | 044 | 05 | BILL 10 | B10 | S2 | FC2 | R00 | ACF05 | 044 |  |  |  |  |  |  |  |  |  | FA |  |  |  |  |  |  |  |  |  |
| T16CO04407C0 |  | PT-16 ; C2 Glazing (Common Zone) | 30d | 2012-05-10 | 2012-06-13 | T16CO04405C0 SS, T16CO04405C0 FF, T16CO04403C0 SS+14d |  |  |  |  | 9d | 0d | FACADE CURTAIN WALL 2 [4766.9 h]; FACADE CURTAIN WALL 2 [812.93 m2]; FACADE TOTAL QUANTITY m2 [812.93 m2]; Cost |  |  | T16CO04407C0 | PT | C | 16 | CO | FA | 044 | 07 | BILL 10 | B10 | S2 | FC2 | R00 | ACF05 | 044 |  |  |  |  |  |  |  |  |  | FA |  |  |  |  |  |  |  |  |  |
|  | 02 | **PAT RM-1** |  | 2011-08-02 | 2013-02-20 |  |  |  |  |  |  |  |  |  |  |  |  |  |  |  |  |  |  |  |  |  |  |  |  |  |  |  |  |  |  |  |  |  |  |  |  |  |  |  |  |  |  |  |  |
| T16P123001C0 |  | PT-16 ; 1st Fix, Inst. of Supports for MEP (PAT RM-1) | 53.88d | 2011-08-02 A | 2011-12-04 | T16CO07807C0 | 10% | 48.49d | 2011-08-25 | 2011-10-29 | 86.81d | 0d | MECHANICAL [4027.2 h]; Cost [45150.4 AED] | 45,150.38 | 4,515.04 | T16P123001C0 | PT | C | 16 | P1 | ME | 230 | 01 | BILL 10 | B10 | S2 | 1F | R00 | ACF04 | 230 |  |  |  |  |  |  |  |  |  | MEP | 10 | 0 |  | 1S | M1F |  |  |  |  |
| T16P109201C0 |  | PT-16 ; Metal Studs (PAT RM-1) | 43d | 2011-09-05 A | 2012-06-13 | T16P123001C0, T16CO04407C0 FF, T16CO04405C0 FF, T16P123001C0 FF | 22% | 33.6d | 2012-05-02 | 2012-06-23 | 9d | 0d | PARTITIONS [3551 h]; PARTITIONS - Metal Studs [493 m]; Cost |  |  | T16P109201C0 | PT | C | 16 | P1 | PT | 092 | 01 | BILL 10 | B10 | S2 | 1F | R00 | ACF06 | 092 |  |  |  |  |  |  |  |  |  | GP |  |  | 20 |  | PMS | 313 | 944 |  |  |
| T16P126001C0 |  | PT-16 ; 1st Fix, Inst of Trunking/Conduiting (PAT RM-1) | 48d | 2011-12-04 | 2012-01-30 | T16CO07807C0, T16P123001C0 |  |  |  |  | 86.81d | 0d | ELECTRICAL [734.4 h]; Cost |  |  | T16P126001C0 | PT | C | 16 | P1 | ME | 260 | 01 | BILL 10 | B10 | S2 | 1F | R00 | ACF04 | 260 |  |  |  |  |  |  |  |  |  | MEP |  |  |  | 1S | M1F |  |  |  |  |
| T16P109702C0 |  | PT-16 ; Installation of Bathroom Pods (PAT RM-1) | 0d | 2011-12-11 | 2011-12-11 | T15P109702C0, T15P209702C0, T16CO07807C0, AAFCI09201R02 FS+118d |  |  |  |  | 175.25d | 0d | Cost |  |  | T10P109701C0 | PT | C | 16 | P1 | BP | 097 | 01 | BILL 10 | B10 | S2 | FG | R00 | ACF06 | 097 |  |  |  |  |  |  |  |  |  |  |  |  |  |  |  | 105 | 1002 |  |  |
| T16P127010C0 |  | PT-16 ; 1st Fix, Inst of Trunking for ELV system (PAT RM-1) | 48d | 2011-12-20 | 2012-02-16 | T16CO07807C0, T16P123001C0, T16P126001C0 SS+14d |  |  |  |  | 86.81d | 0d | ELECTRICAL [1512 h]; Cost |  |  | T16P127010C0 | PT | C | 16 | P1 | ME | 270 | 10 | BILL 10 | B10 | S2 | 1F | R00 | ACF04 | 270 |  |  |  |  |  |  |  |  |  | MEP |  |  |  | 1S | M1F |  |  |  |  |
| T16P126013C0 |  | PT-16 ; 1st Fix, Inst of Cable Tray (PAT RM-1) | 48d | 2012-01-04 | 2012-03-01 | T16CO07807C0, T16P123001C0, T16P127010C0 SS+12d |  |  |  |  | 86.81d | 0d | ELECTRICAL [399.6 h]; Cost |  |  | T16P126013C0 | PT | C | 16 | P1 | ME | 260 | 13 | BILL 10 | B10 | S2 | 1F | R00 | ACF04 | 260 |  |  |  |  |  |  |  |  |  | MEP |  |  |  | 1S | M1F |  |  |  |  |
| T16P122019C0 |  | PT-16 ; 1st Fix, Inst of Drainage pipe (ceiling) (PAT RM-1) | 48d | 2012-01-21 | 2012-03-18 | T16P123001C0, T16P126013C0 SS+14d |  |  |  |  | 86.81d | 0d | PLUMBING [1378.8 h]; Cost |  |  | T16P122019C0 | PT | C | 16 | P1 | ME | 220 | 19 | BILL 10 | B10 | S2 | 1F | R00 | ACF04 | 220 |  |  |  |  |  |  |  |  |  | MEP |  |  |  | 1S | M1F |  |  |  |  |
| T16P122005C0 |  | PT-16 ; 1st Fix, Inst of Water supply pipe (ceiling) (PAT RM-1) | 60d | 2012-02-01 | 2012-04-12 | T16P122019C0 SS+10d, T16P123001C0 |  |  |  |  | 86.81d | 0d | PLUMBING [4548 h]; Cost |  |  | T16P122005C0 | PT | C | 16 | P1 | ME | 220 | 05 | BILL 10 | B10 | S2 | 1F | R00 | ACF04 | 220 |  |  |  |  |  |  |  |  |  | MEP |  |  |  | 1S | M1F |  |  |  |  |
| T16P121111C0 |  | PT-16 ; 1st Fix, Inst of Sprinkler main pipe (PAT RM-1) | 48d | 2012-02-13 | 2012-04-09 | T16P122005C0 SS+9d, T16P123001C0 |  |  |  |  | 86.81d | 0d | MECHANICAL [853.2 h]; Cost |  |  | T16P121111C0 | PT | C | 16 | P1 | ME | 211 | 11 | BILL 10 | B10 | S2 | 1F | R00 | ACF04 | 211 |  |  |  |  |  |  |  |  |  | MEP |  |  |  | 1S | M1F |  |  |  |  |
| T16P122007C0 |  | PT-16 ; 1st Fix, Inst of Medical Gas pipe (PAT RM-1) | 48d | 2012-02-27 | 2012-04-23 | T16P121111C0 SS+12d, T16P123001C0 |  |  |  |  | 101.81d | 92.81d | PLUMBING [1149.6 h]; Cost |  |  | T16P122007C0 | PT | C | 16 | P1 | ME | 220 | 07 | BILL 10 | B10 | S2 | 1F | R00 | ACF04 | 220 |  |  |  |  |  |  |  |  |  | MEP |  |  |  | 1S | M1F |  |  |  |  |
| T16P127001C0 |  | PT-16 ; 1st Fix, Wiring/ Cabling work (PAT RM-1) | 48d | 2012-03-01 | 2012-04-26 | T16P126001C0, T16P126013C0, T16P127010C0 |  |  |  |  | 128.81d | 119.81d | ELECTRICAL [392.4 h]; Cost |  |  | T16P127001C0 | PT | C | 16 | P1 | ME | 270 | 01 | BILL 10 | B10 | S2 | 1F | R00 | ACF04 | 270 |  |  |  |  |  |  |  |  |  | MEP |  |  |  | 1S | M1F |  |  |  |  |
| T16P123017C0 |  | PT-16 ; 1st Fix, Inst of CHW pipe (PAT RM-1) | 54d | 2012-05-17 | 2012-07-19 | T16P121111C0 SS+9d, T16P123001C0, T16P105503C0 FF+12d |  |  |  |  | 15d | 0d | MECHANICAL [2467.2 h]; Cost |  |  | T16P123017C0 | PT | C | 16 | P1 | ME | 230 | 17 | BILL 10 | B10 | S2 | 1F | R00 | ACF04 | 230 |  |  |  |  |  |  |  |  |  | MEP |  |  |  | 1S | M1F |  |  |  |  |
| T16P123023C0 |  | PT-16 ; 1st Fix, Inst of Main Ducting (PAT RM-1) | 52d | 2012-05-24 | 2012-07-24 | T16P123001C0, T16P123017C0 SS+6d |  |  |  |  | 17d | 0d | MECHANICAL [8022 h]; Cost |  |  | T16P123023C0 | PT | C | 16 | P1 | ME | 230 | 23 | BILL 10 | B10 | S2 | 1F | R00 | ACF04 | 230 |  |  |  |  |  |  |  |  |  | MEP |  |  |  | 1S | M1F |  |  |  |  |
| T16P123008C0 |  | PT-16 ; 1st Fix, Inst of VCD's/FD's (PAT RM-1) | 48d | 2012-05-31 | 2012-07-26 | T16P123023C0 SS+6d, T16P105503C0 FF+12d |  |  |  |  | 51d | 42d | MECHANICAL [1753.2 h]; Cost |  |  | T16P123008C0 | PT | C | 16 | P1 | ME | 230 | 08 | BILL 10 | B10 | S2 | 1F | R00 | ACF04 | 230 |  |  |  |  |  |  |  |  |  | MEP |  |  |  | 1S | M1F |  |  |  |  |
| T16P105503C0 |  | PT-16 ; Ceiling Support for medical equipment (PAT RM-1) | 18d | 2012-06-14 | 2012-07-05 | T16P109201C0, TAFCI22011R20 FS+79d |  |  |  |  | 15d | 0d | SECONDARY STEEL [62 h]; STRUCTURAL STEEL [28 T(Fe)]; Cost |  |  | D03EY05503C0 | PT | C | 16 | P1 | SW | 055 | 03 | BILL 10 | B10 | S2 | 03 | R00 | ACF03 | b |  |  |  |  |  |  |  |  |  |  |  |  |  |  |  | 335 | 962 |  |  |
| T16P105511C0 |  | PT-16 ; Wall reinforcement for MEP/Medical (PAT RM-1) | 18d | 2012-06-14 | 2012-07-05 | T16P109201C0, TAFCI22011R02 FS+79d |  |  |  |  | 21d | 12d | SECONDARY STEEL [26 h]; Cost |  |  | T16P105511C0 | PT | C | 16 | P1 | SW | 055 | 11 | BILL 10 | B10 | S2 | 03 | R00 | ACF03 | b |  |  |  |  |  |  |  |  |  |  |  |  |  |  |  |  |  |  |  |
| T16P108103C0 |  | PT-16 ; Door Frames (PAT RM-1) | 36d | 2012-06-14 | 2012-07-26 | T16P109201C0, GNHE08101C0 FS+126d |  |  |  |  | 27d | 18d | ASSORTED DOORS [303 h]; Cost |  |  | T16P108103C0 | PT | C | 16 | P1 | DO | 081 | 03 | BILL 10 | B10 | S2 | DF | R00 | ACF06 | 081 |  |  |  |  |  |  |  |  |  |  |  |  |  |  |  | 316 | 947 | 08 |  |
| T16P109203C0 |  | PT-16 ; Partitions 1st face (PAT RM-1) | 18d | 2012-06-14 | 2012-07-05 | T16P109201C0 |  |  |  |  | 21d | 12d | PARTITIONS [493 m]; PARTITIONS [2772 h]; Cost |  |  | T16P109203C0 | PT | C | 16 | P1 | PT | 092 | 03 | BILL 10 | B10 | S2 | 2F | R00 | ACF06 | 092 |  |  |  |  |  |  |  |  |  | GP |  |  |  |  | P1F | 314 | 945 |  |  |
| T16P121117C0 |  | PT-16 ; 1st Fix, Inst of Sprinkler branch pipe (PAT RM-1) | 48d | 2012-06-14 | 2012-08-09 | T16P109201C0, T16P121111C0, T16P105503C0 FF+12d |  |  |  |  | 39d | 30d | MECHANICAL [561.6 h]; Cost |  |  | T16P121117C0 | PT | C | 16 | P1 | ME | 211 | 17 | BILL 10 | B10 | S2 | 1F | R00 | ACF04 | 211 |  |  |  |  |  |  |  |  |  | MEP |  |  |  | 1S | M1F |  |  |  |  |
| T16P122011C0 |  | PT-16 ; 2nd Fix, Drainage/Water pipe (wall) (PAT RM-1) | 24d | 2012-06-14 | 2012-07-12 | T16P109201C0 |  |  |  |  | 9d | 0d | PLUMBING [1378.8 h]; Cost |  |  | T16P122011C0 | PT | C | 16 | P1 | ME | 220 | 11 | BILL 10 | B10 | S2 | 2F | R00 | ACF07 | 220 |  |  |  |  |  |  |  |  |  | MEP |  |  |  | 2n |  |  |  |  |  |
| T16P122015C0 |  | PT-16 ; 2nd Fix, Medical Gas pipe (PAT RM-1) | 24d | 2012-06-14 | 2012-07-12 | T16P109201C0, T16P122007C0 SS |  |  |  |  | 9d | 0d | PLUMBING [1149.6 h]; Cost |  |  | T16P122015C0 | PT | C | 16 | P1 | ME | 220 | 15 | BILL 10 | B10 | S2 | 2F | R00 | ACF07 | 220 |  |  |  |  |  |  |  |  |  | MEP |  |  |  | 2n |  |  |  |  |  |
| T16P126009C0 |  | PT-16 ; 2nd Fix, Inst of Wall conduites (PAT RM-1) | 24d | 2012-06-14 | 2012-07-12 | T16P109201C0 |  |  |  |  | 9d | 0d | ELECTRICAL [734.4 h]; Cost |  |  | T16P126009C0 | PT | C | 16 | P1 | ME | 260 | 09 | BILL 10 | B10 | S2 | 2F | R00 | ACF07 | 260 |  |  |  |  |  |  |  |  |  | MEP |  |  |  | 2n |  |  |  |  |  |
| T16P101005C0 |  | PT-16 ; 2nd, Wall Inspection by Consultant (PAT RM-1) | 6d | 2012-07-14 | 2012-07-19 | T16P122011C0, T16P122015C0, T16P126009C0 |  |  |  |  | 9d | 0d | Labor General [1.2 h]; Cost |  |  | T16P101005C0 | PT | C | 16 | P1 | ME | 010 | 05 | BILL 10 | B10 | S2 | WI | R00 | ACF07 | 010 |  |  |  |  |  |  |  |  |  | MEP |  |  |  | 2n |  |  |  |  |  |
| T16P109205C0 |  | PT-16 ; Partitions Closing (PAT RM-1) | 24d | 2012-07-21 | 2012-08-16 | T16P101005C0, T16P105511C0, T16P109203C0, T16P122005C0, T16P122019C0, TAFOA09214C1 FF, T16P109702C0 FF, T16P108103C0 FF |  |  |  |  | 9d | 0d | PARTITIONS [493 m]; PARTITIONS [3563 h]; Cost |  |  | T16P109205C0 | PT | C | 16 | P1 | PT | 092 | 05 | BILL 10 | B10 | S2 | FF | R00 | ACF06 | 092 |  |  |  |  |  |  |  |  |  | GP |  |  |  |  | P2F | 315 | 946 |  |  |
| T16P123009C0 |  | PT-16 ; 2nd Fix, Inst of VAV'S CHW connection (PAT RM-1) | 36d | 2012-07-21 | 2012-09-02 | T16P123017C0 |  |  |  |  | 15d | 0d | MECHANICAL [1450.8 h]; Cost |  |  | T16P123009C0 | PT | C | 16 | P1 | ME | 230 | 09 | BILL 10 | B10 | S2 | 2F | R00 | ACF07 | 230 |  |  |  |  |  |  |  |  |  | MEP |  |  |  | 2n |  |  |  |  |  |
| T16P123015C0 |  | PT-16 ; 2nd Fix, Insulation of CHW pipe & Duct (PAT RM-1) | 36d | 2012-07-28 | 2012-09-09 | T16P123009C0 SS+6d, T16P123017C0, T16P123023C0 |  |  |  |  | 15d | 6d | MECHANICAL [3064.8 h]; Cost |  |  | T16P123015C0 | PT | C | 16 | P1 | ME | 230 | 15 | BILL 10 | B10 | S2 | 2F | R00 | ACF07 | 230 |  |  |  |  |  |  |  |  |  | MEP |  |  |  | 2n |  |  |  |  |  |
| T16P107103C0 |  | PT-16 ; Waterproofing (PAT RM-1) | 11.88d | 2012-08-18 | 2012-09-02 | T16P108103C0, T16P109205C0 |  |  |  |  | 47.13d | 32.12d | THERMAL & MOISTURE [504 h]; THERMAL & MOISTURE [3326 m2]; Cost |  |  | T16P107103C0 | PT | C | 16 | P1 | FF | 071 | 03 | BILL 10 | B10 | S2 | 01 | R00 | ACF03 | 071 |  |  |  |  |  |  |  |  |  |  |  |  |  |  |  | 105 | 999 |  |  |
| T16P109901C0 |  | PT-16 ; Wall Prime & 1st coat (PAT RM-1) | 24d | 2012-08-18 | 2012-09-16 | T16P109205C0 |  |  |  |  | 9d | 0d | WALL PAINT [587 h]; WALL PAINT [731 m2]; Cost |  |  | T16P109901C0 | PT | C | 16 | P1 | PA | 099 | 01 | BILL 10 | B10 | S2 | 01 | R00 | ACF06 | 099 |  |  |  |  |  |  |  |  |  |  |  |  |  |  |  | 328 | 956 |  |  |
| T16P126005C0 |  | PT-16 ; 2nd Fix, Wiring for Power/Lighting/Emergency (PAT RM-1) | 42d | 2012-08-18 | 2012-10-07 | T16P109205C0 |  |  |  |  | 23d | 0d | ELECTRICAL [392.4 h]; Cost |  |  | T16P126005C0 | PT | C | 16 | P1 | ME | 260 | 05 | BILL 10 | B10 | S2 | 2F | R00 | ACF07 | 260 |  |  |  |  |  |  |  |  |  | MEP |  |  |  | 2n |  |  |  |  |  |
| T16P126007C0 |  | PT-16 ; 2nd Fix, Cable Pulling (PAT RM-1) | 48d | 2012-08-18 | 2012-10-14 | T16P109201C0 SS+6d, T16P109205C0 |  |  |  |  | 59d | 50d | ELECTRICAL [2683.2 h]; Cost |  |  | T16P126007C0 | PT | C | 16 | P1 | ME | 260 | 07 | BILL 10 | B10 | S2 | 2F | R00 | ACF07 | 260 |  |  |  |  |  |  |  |  |  | MEP |  |  |  | 2n |  |  |  |  |  |
| T16P126011C0 |  | PT-16 ; 2nd Fix, Inst of Equipment (DB) (PAT RM-1) | 54d | 2012-08-18 | 2012-10-21 | T16P109205C0 |  |  |  |  | 41d | 20d | ELECTRICAL [878.4 h]; Cost |  |  | T16P126011C0 | PT | C | 16 | P1 | ME | 260 | 11 | BILL 10 | B10 | S2 | 2F | R00 | ACF04 | 260 |  |  |  |  |  |  |  |  |  | MEP |  |  |  | 2n |  |  |  |  | E |
| T16P126053C0 |  | PT-16 ; 2nd Fix, Wiring / Cabling (PAT RM-1) | 24d | 2012-08-18 | 2012-09-16 | T16P109203C0, T16P109205C0 |  |  |  |  | 29d | 20d | ELECTRICAL [392.4 h]; Cost |  |  | T16P126053C0 | PT | C | 16 | P1 | ME | 260 | 53 | BILL 10 | B10 | S2 | 2F | R00 | ACF07 | 260 |  |  |  |  |  |  |  |  |  | MEP |  |  |  | 2n |  | 389 | 977 |  |  |
| T16P127020C0 |  | PT-16 ; 2nd Fix, Inst of ELV Equipment (Panels) (PAT RM-1) | 48d | 2012-08-18 | 2012-10-14 | T16P109205C0 |  |  |  |  | 47d | 26d | ELECTRICAL [1819.2 h]; Cost |  |  | T16P127020C0 | PT | C | 16 | P1 | ME | 270 | 20 | BILL 10 | B10 | S2 | 2F | R00 | ACF04 | 270 |  |  |  |  |  |  |  |  |  | MEP |  |  |  | 2n |  |  |  |  | E |
| T16P105501C0 |  | PT-16 ; Handrails & balustrade (PAT RM-1) | 30.75d | 2012-09-17 | 2012-10-22 | T16P109901C0 |  |  |  |  | 82.25d | 73.25d | SECONDARY STEEL [230 h]; Cost |  |  | T16P105501C0 | PT | C | 16 | P1 | SW | 055 | 01 | BILL 10 | B10 | S2 | 01 | R00 | ACF03 | a |  |  |  |  |  |  |  |  |  |  |  |  |  |  |  |  |  |  |  |
| T16P109501C0 |  | PT-16 ; Ceiling Grid and Service Tile (PAT RM-1) | 20d | 2012-09-17 | 2012-10-09 | T16P105503C0, T16P109205C0 SS+15d, T16P121117C0, T16P123008C0, T16P123009C0, T16P123015C0, T16P127001C0, T16P126053C0 FF, T16P109901C0 |  |  |  |  | 9d | 0d | CEILING GRID FOR GYPSUM [4870 h]; CEILING GRID FOR GYPSUM [416.8 m2]; Cost |  |  | T16P109501C0 | PT | C | 16 | P1 | CE | 095 | 01 | BILL 10 | B10 | S2 | 01 | R00 | ACF06 | 095 |  |  |  |  |  |  |  |  |  |  |  |  |  |  |  | 323 | 952 |  |  |
| T16P109510C0 |  | PT-16 ; Patient Lift Ceiling Rail (by others) (PAT RM-1) | 30d | 2012-09-17 | 2012-10-21 | T16P109501C0 SS |  |  |  |  | 53d | 44d | Labor General [0.2 h]; Cost |  |  | I06P109501C0 | PT | C | 16 | P1 | CE | 095 | 10 | BILL 10 | B10 | S2 | 02 | R00 | ACF06 | 095 |  |  |  |  |  |  |  |  |  |  |  |  |  |  |  | 323 | 952 |  |  |
| T16P126015C0 |  | PT-16 ; Final Fix, Termination & Gladding of Cables (PAT RM-1) | 36d | 2012-10-08 | 2012-11-21 | T16P126005C0 |  |  |  |  | 23d | 3d | ELECTRICAL [148.8 h]; Cost |  |  | T16P126015C0 | PT | C | 16 | P1 | ME | 260 | 15 | BILL 10 | B10 | S2 | FF | R00 | ACF07 | 260 |  |  |  |  |  |  |  |  |  | MEP |  |  |  | FF |  |  |  |  |  |
| T16P109305C0 |  | PT-16 ; Flooring (Terrazzo) (PAT RM-1) | 30d | 2012-10-10 | 2012-11-17 | T16P109501C0, T16P107103C0 |  |  |  |  | 15d | 0d | TERRAZO FLOOR [1427 m2]; TERRAZO FLOOR [2568 h]; Cost |  |  | T16P109305C0 | PT | C | 16 | P1 | FF | 096 | 05 | BILL 10 | B10 | S2 | 07 | R00 | ACF06 | TZ |  |  |  |  |  |  |  |  |  |  |  |  |  |  |  | 106 | 1000 |  |  |
| T16P109601C0 |  | PT-16 ; Flooring (Rubber & etc) (PAT RM-1) | 18d | 2012-10-10 | 2012-11-01 | T16P109501C0 |  |  |  |  | 9d | 0d | RUBBER FLOOR [32 h]; RUBBER FLOOR [77 m2]; Cost |  |  | T16P109601C0 | PT | C | 16 | P1 | FF | 096 | 01 | BILL 10 | B10 | S2 | 03 | R00 | ACF06 | RF |  |  |  |  |  |  |  |  |  |  |  |  |  |  |  | 326 | 955 |  |  |
| T16P109905C0 |  | PT-16 ; Ceiling Prime & 1st coat (PAT RM-1) | 30d | 2012-10-10 | 2012-11-17 | T16P109501C0 |  |  |  |  | 33d | 0d | CEILING PAINT [36 h]; CEILING PAINT [43 m2]; Cost |  |  | T16P109905C0 | PT | C | 16 | P1 | PA | 099 | 05 | BILL 10 | B10 | S2 | 01 | R00 | ACF06 | 099 |  |  |  |  |  |  |  |  |  |  |  |  |  |  |  | 330 | 958 |  |  |
| T16P121115C0 |  | PT-16 ; 2nd Fix, Inst of Sprinkler droppers (PAT RM-1) | 30d | 2012-10-10 | 2012-11-17 | T16P109501C0 |  |  |  |  | 20d | 0d | MECHANICAL [1602 h]; Cost |  |  | T16P121115C0 | PT | C | 16 | P1 | ME | 211 | 15 | BILL 10 | B10 | S2 | 2F | R00 | ACF07 | 211 |  |  |  |  |  |  |  |  |  | MEP |  |  |  | 2n |  |  |  |  |  |
| T16P123021C0 |  | PT-16 ; 2nd Fix, Inst of Flexible Duct & Plenum boxes (PAT RM-1) | 24d | 2012-10-10 | 2012-11-08 | T16P109205C0, T16P109501C0 |  |  |  |  | 21d | 0d | MECHANICAL [30 h]; Cost |  |  | T16P123021C0 | PT | C | 16 | P1 | ME | 230 | 21 | BILL 10 | B10 | S2 | 2F | R00 | ACF07 | 230 |  |  |  |  |  |  |  |  |  | MEP |  |  |  | 2n |  |  |  |  |  |
| T16P126017C0 |  | PT-16 ; Final Fix, Inst of Ceiling rose (PAT RM-1) | 36d | 2012-10-10 | 2012-11-24 | T16P109501C0 |  |  |  |  | 21d | 0d | ELECTRICAL [61.2 h]; Cost |  |  | T16P126017C0 | PT | C | 16 | P1 | ME | 260 | 17 | BILL 10 | B10 | S2 | FF | R00 | ACF07 | 260 |  |  |  |  |  |  |  |  |  | MEP |  |  |  | FF |  |  |  |  |  |
| T16P127002C0 |  | PT-16 ; 2nd Fix, Wiring Droppers (PAT RM-1) | 30d | 2012-10-10 | 2012-11-17 | T16P109501C0 |  |  |  |  | 21d | 0d | ELECTRICAL [392.4 h]; Cost |  |  | T16P127002C0 | PT | C | 16 | P1 | ME | 270 | 02 | BILL 10 | B10 | S2 | 2F | R00 | ACF07 | 270 |  |  |  |  |  |  |  |  |  | MEP |  |  |  | 2n |  |  |  |  |  |
| T16P140303C0 |  | PT-16 ; Final Fix, Pneumatic Station (PAT RM-1) | 36d | 2012-10-10 | 2012-11-24 | T16P109501C0 |  |  |  |  | 45d | 36d | MECHANICAL [2974.8 h]; Cost |  |  | T16P140303C0 | PT | C | 16 | P1 | ME | 403 | 03 | BILL 10 | B10 | S2 | FF | R00 | ACF07 | 403 |  |  |  |  |  |  |  |  |  | MEP |  |  |  | FF |  |  |  |  |  |
| T16P123019C0 |  | PT-16 ; Final Fix, Inst of Grilles & Diffusers (PAT RM-1) | 30d | 2012-10-17 | 2012-11-24 | T16P109501C0, T16P123021C0 SS+6d |  |  |  |  | 21d | 1d | MECHANICAL [1498.8 h]; Cost |  |  | T16P123019C0 | PT | C | 16 | P1 | ME | 230 | 19 | BILL 10 | B10 | S2 | FF | R00 | ACF07 | 230 |  |  |  |  |  |  |  |  |  | MEP |  |  |  | FF |  |  |  |  |  |
| T16P126003C0 |  | PT-16 ; Final Fix, Inst of Light fittings (PAT RM-1) | 30d | 2012-10-17 | 2012-11-24 | T16P109501C0, T16P126017C0 SS+6d |  |  |  |  | 21d | 1d | ELECTRICAL [7815.6 h]; Cost |  |  | T16P126003C0 | PT | C | 16 | P1 | ME | 260 | 03 | BILL 10 | B10 | S2 | FF | R00 | ACF07 | 260 |  |  |  |  |  |  |  |  |  | MEP |  |  |  | FF |  |  |  |  |  |
| T16P127030C0 |  | PT-16 ; Final Fix, Inst of ELV device (Detector/Speaker) (PAT RM-1) | 30d | 2012-10-17 | 2012-11-24 | T16P109501C0, T16P127002C0 SS+6d |  |  |  |  | 21d | 1d | ELECTRICAL [3571.2 h]; Cost |  |  | T16P127030C0 | PT | C | 16 | P1 | ME | 270 | 30 | BILL 10 | B10 | S2 | FF | R00 | ACF07 | 270 |  |  |  |  |  |  |  |  |  | MEP |  |  |  | FF |  |  |  |  |  |
| T16P121113C0 |  | PT-16 ; Final Fix, Inst of Sprinklers head/ Extinguisher (PAT RM-1) | 30d | 2012-10-18 | 2012-11-25 | T16P109501C0, T16P121115C0 SS+7d |  |  |  |  | 20d | 0d | MECHANICAL [234 h]; Cost |  |  | T16P121113C0 | PT | C | 16 | P1 | ME | 211 | 13 | BILL 10 | B10 | S2 | FF | R00 | ACF07 | 211 |  |  |  |  |  |  |  |  |  | MEP |  |  |  | FF |  |  |  |  |  |
| T16P106101C0 |  | PT-16 ; Wood / caseworks (PAT RM-1) | 36d | 2012-11-03 | 2012-12-16 | T16CO04407C0, T16P109501C0, T16P109601C0, T16P109901C0, TAFWA00101M0 |  |  |  |  | 9d | 0d | WOOD WORK/CASEWORK [873.9 no]; WOOD WORK/CASEWORK [1915 h]; Cost |  |  | T16P106101C0 | PT | C | 16 | P1 | WO | 061 | 01 | BILL 10 | B10 | S2 | WW | R00 | ACF06 | 061 |  |  |  |  |  |  |  |  |  |  |  |  |  |  |  | 332 | 960 |  |  |
| T16P106102C0 |  | PT-16 ; Head/Foot Wall (PAT RM-1) | 36d | 2012-11-03 | 2012-12-16 | T16CO04407C0, T16P109501C0, TAFWA00101M0, T16P106101C0 SS |  |  |  |  | 9d | 0d | WOOD WORK/CASEWORK [1649 h]; Cost |  |  | T16P106102C0 | PT | C | 16 | P1 | WO | 061 | 02 | BILL 10 | B10 | S2 | WW | R00 | ACF06 | 061 |  |  |  |  |  |  |  |  |  |  |  |  |  |  |  | 332 | 960 |  |  |
| T16P108107C0 |  | PT-16 ; Doors (PAT RM-1) | 36d | 2012-11-03 | 2012-12-16 | T16P108103C0, T16P109501C0, T16P109601C0, T16P109901C0 |  |  |  |  | 21d | 0d | ASSORTED DOORS [610 h]; ASSORTED DOORS [61 no]; Cost |  |  | T16P108107C0 | PT | C | 16 | P1 | DO | 081 | 07 | BILL 10 | B10 | S2 | DR | R00 | ACF06 | 081 |  |  |  |  |  |  |  |  |  |  |  |  |  |  |  | 317 | 948 | 08 |  |

| ID | WBS | Activity | Duration | Start | Finish | Predecessors | Complete | Remaining | Planned start | Planned finish | Total float | Free float | Resources | Cost | Actual cost | Change Order # | NEW ACTIVITY ID | change id | CCAD BUILDING(SET) | CCAD PHASE(SET) | CCAD FLOOR(SET) | CCAD ZONE(SET) | CCAD WORK(SET) | CCAD SECTION(SET) | CCAD SERIAL No.(SET) | CCAD CBS(SET) | CCAD BILL(SET) | CCAD HANDOVER(SET) | CCAD TAG(SET) | CCAD REV(SET) | CCADACF (SET) | CCAD SSCF | CCAD SUB ZONE MEP(SET) | CCAD CSA | CCAD DIVISION(SET) | P_811 | P_711 | Act Selector % | U% | CCAD MEQ |
| --- | --- | --- | --- | --- | --- | --- | --- | --- | --- | --- | --- | --- | --- | --- | --- | --- | --- | --- | --- | --- | --- | --- | --- | --- | --- | --- | --- | --- | --- | --- | --- | --- | --- | --- | --- | --- | --- | --- | --- | --- |
| T16P109701C0 |  | PT-16 ; Wall finishes (ST, WD, WC) (PAT RM-1) | 24d | 2012-11-18 | 2012-12-16 | T16P126011C0, T16P127020C0, T16P109501C0, T16P109601C0, T16P109305C0 |  |  |  |  | 21d | 0d | ASSORTED WALL FINISH [519 h]; ASSORTED WALL FINISH [595 m2]; Cost |  |  | 105 | 1002 | T16P109701C0 | PT | C | 16 | P1 | WF | 097 | 01 | BILL 10 | B10 | S2 | 01 | R00 | ACF06 | 097 |  |  |  |  |  |  |  |  |
| T16P109903C0 |  | PT-16 ; Wall Final Paint (PAT RM-1) | 30d | 2012-11-18 | 2012-12-23 | T16P109901C0, T16P109905C0, T16P109501C0 |  |  |  |  | 33d | 24d | WALL PAINT [316 h]; WALL PAINT [394 m2]; Cost |  |  | 329 | 957 | T16P109903C0 | PT | C | 16 | P1 | PA | 099 | 03 | BILL 10 | B10 | S2 | 02 | R00 | ACF06 | 099 |  |  |  |  |  |  |  |  |
| T16P122021C0 |  | PT-16 ; Final Fix, Terminate Sanitary Ware & Appliances (PAT RM-1) | 36d | 2012-11-18 | 2012-12-30 | T16P122011C0, T16P122025C0 SS |  |  |  |  | 15d | 6d | PLUMBING [3361.2 h]; Cost |  |  |  |  | T16P122021C0 | PT | C | 16 | P1 | ME | 220 | 21 | BILL 10 | B10 | S2 | FF | R00 | ACF07 | 220 | FF | MEP |  |  |  |  |  |  |
| T16P122025C0 |  | PT-16 ; Final Fix, Inst of Sanitary Ware (PAT RM-1) | 36d | 2012-11-18 | 2012-12-30 | T16P109205C0, T16P109305C0 |  |  |  |  | 15d | 0d | PLUMBING [3690 h]; Cost |  |  |  |  | T16P122025C0 | PT | C | 16 | P1 | ME | 220 | 25 | BILL 10 | B10 | S2 | FF | R00 | ACF07 | 220 | FF | MEP |  |  |  |  |  |  |
| T16P101006C0 |  | PT-16 ; 2nd, Ceiling Inspection by Consultants (PAT RM-1) | 6d | 2012-11-26 | 2012-12-02 | T16P121115C0, T16P123009C0, T16P123015C0, T16P127002C0, T16P109501C0, T16P121113C0, T16P123019C0, T16P126015C0, T16P126017C0, T16P126003C0, T16P127030C0 |  |  |  |  | 20d | 11d | Labor General [1.2 h]; Cost |  |  |  |  | T16P101006C0 | PT | C | 16 | P1 | ME | 010 | 06 | BILL 10 | B10 | S2 | CI | R00 | ACF07 | 010 | 2n | MEP |  |  |  |  |  |  |
| T16P108709C0 |  | PT-16 ; Ironmongery (PAT RM-1) | 18d | 2012-12-17 | 2013-01-07 | T16P108107C0 |  |  |  |  | 21d | 12d | IRONMONGERY [870 h]; IRONMONGERY [87 no]; Cost |  |  | 322 | 951 | T16P108709C0 | PT | C | 16 | P1 | DO | 087 | 09 | BILL 10 | B10 | S2 | IM | R00 | ACF06 | 087 |  |  | 08 |  |  |  |  |  |
| T16P109503C0 |  | PT-16 ; Ceiling closure - ACT/Gypsum (PAT RM-1) | 18d | 2012-12-17 | 2013-01-07 | T16P101006C0, T16P109510C0, T16P121115C0, T16P126005C0, T16P127001C0, T16P127002C0, TAFOA09513C1 FF, T16P106101C0, T16P123021C0, T16P126007C0 |  |  |  |  | 9d | 0d | ASSORTED CEILING FINISH [549.81 h]; CEILING GYPSUM [136.74 h]; ASSORTED CEILING FINISH [894 m2]; CEILING GYPSUM [417 m2]; Cost |  |  | 324 | 953 | T16P109503C0 | PT | C | 16 | P1 | CE | 095 | 03 | BILL 10 | B10 | S2 | 02 | R00 | ACF06 | 095 |  |  |  |  |  |  |  |  |
| T16P111001C0 |  | PT-16 ; Wall Protection (WP, CG, WG, FCG) (PAT RM-1) | 18d | 2012-12-17 | 2013-01-07 | T16P109701C0, T16P109903C0 SS |  |  |  |  | 21d | 12d | FF&E [27 h]; Cost |  |  | 326 | 1001 | T16P111001C0 | PT | C | 16 | P1 | WF | 110 | 01 | BILL 10 | B10 | S2 | 03 | R00 | ACF08 | b |  |  |  |  |  |  |  |  |
| T16P111003C0 |  | PT-16 ; FF & E (PAT RM-1) | 24d | 2012-12-17 | 2013-01-14 | T16P109601C0, T16P106101C0 |  |  |  |  | 15d | 6d | FF&E [1067 h]; Cost |  |  | 333 | 961 | T16P111003C0 | PT | C | 16 | P1 | WO | 110 | 03 | BILL 10 | B10 | S2 | 04 | R00 | ACF08 | a |  |  |  |  |  |  |  |  |
| T16P122029C0 |  | PT-16 ; Final Fix, Medical Gas pipe (PAT RM-1) | 18d | 2012-12-17 | 2013-01-07 | T16P109501C0, T16P106102C0 |  |  |  |  | 9d | 0d | PLUMBING [1149.6 h]; Cost |  |  |  |  | T16P122029C0 | PT | C | 16 | P1 | ME | 220 | 29 | BILL 10 | B10 | S2 | FF | R00 | ACF07 | 220 | FF | MEP |  |  |  |  |  |  |
| T16P109676C1 |  | PT-16, Carpet Tile Finish (Patient Room-1) | 0d | 2013-01-08 | 2013-01-08 | T16P109903C0 SS, T16P109907C0 SS |  |  |  |  | 21d | 12d | Cost |  |  |  |  |  | PT | C | 16 | P1 | FF | 096 |  |  | B10 |  |  | R00 | ACF06 | CPT |  | CPT |  |  |  |  |  |  |
| T16P109907C0 |  | PT-16 ; Ceiling Final paint (PAT RM-1) | 12d | 2013-01-08 | 2013-01-21 | T16P109601C0, T16P109905C0, T16P109503C0 |  |  |  |  | 9d | 0d | CEILING PAINT [20 h]; CEILING PAINT [23 m2]; Cost |  |  | 331 | 959 | T16P109907C0 | PT | C | 16 | P1 | PA | 099 | 07 | BILL 10 | B10 | S2 | 02 | R00 | ACF06 | 099 |  |  |  |  |  |  |  |  |
| T16P122027C0 |  | PT-16 ; Final Fix, Inst of All drain (PAT RM-1) | 12d | 2013-01-08 | 2013-01-21 | T16P109305C0, T16P109503C0 |  |  |  |  | 9d | 0d | PLUMBING [1378.8 h]; Cost |  |  |  |  | T16P122027C0 | PT | C | 16 | P1 | ME | 220 | 27 | BILL 10 | B10 | S2 | FF | R00 | ACF07 | 220 | FF | MEP |  |  |  |  |  |  |
| T16P126019C0 |  | PT-16 ; Final Fix, Inst of Switch/Sockets (PAT RM-1) | 12d | 2013-01-08 | 2013-01-21 | T16P109901C0, T16P109503C0 |  |  |  |  | 9d | 0d | ELECTRICAL [316.8 h]; Cost |  |  |  |  | T16P126019C0 | PT | C | 16 | P1 | ME | 260 | 19 | BILL 10 | B10 | S2 | FF | R00 | ACF07 | 260 | FF | MEP |  |  |  |  |  |  |
|  | 10 | **Precommissioning Tesing & snagging (PAT RM-1)** |  | 2013-01-08 | 2013-02-20 |  |  |  |  |  |  |  |  |  |  |  |  |  |  |  |  |  |  |  |  |  |  |  |  |  |  |  |  |  |  |  |  |  |  |  |
| T16TS01801C0 |  | PT-16 ; MEP de-snag, FIREM sign-off | 12d | 2013-01-08 | 2013-01-21 | T16P122025C0, T16P126015C0, T16P122021C0, T16P121113C0, T16P123019C0, T16P140303C0, T16P122029C0, T16P126017C0, T16P126003C0, T16P127030C0 |  |  |  |  | 9d | 0d | TESTING & COMMISSIONING [2040 h]; Cost |  |  |  |  | T16TS01801C0 | PT | C | 16 | TS | SC | 018 | 01 | BILL 10 | B10 | S2 | 01 | R00 | ACF07 | 018 |  |  |  |  |  |  |  |  |
| T16TS01808C0 |  | PT-16 ; Touch-up & Clean / JV inspection /CIR /De-snag | 18d | 2013-01-22 | 2013-02-12 | T16P105501C0, T16P106101C0, T16P106102C0, T16P108709C0, T16P109305C0, T16P109510C0, T16P109601C0, T16P109701C0, T16P109903C0, T16P109907C0, T16P111001C0, T16P111003C0, T16TS01801C0, T16P109503C0, T16P109676C1, T16P126019C0, T16P122027C0 |  |  |  |  | 9d | 0d | TESTING & COMMISSIONING [128 h]; Cost |  |  |  |  | T16TS01802C0 | PT | C | 16 | TS | SC | 018 | 02 | BILL 10 | B10 | S2 | 02 | R00 | ACF07 | 018 |  |  |  |  |  |  |  |  |
| T16TS01813C0 |  | PT-16 ; Consultant's final de-snag inspection | 7d | 2013-02-13 | 2013-02-20 | T16TS01808C0 |  |  |  |  | 9d | 0d | Labor General [1 h]; Cost |  |  |  |  | T16TS01803C0 | PT | C | 16 | TS | SC | 018 | 03 | BILL 10 | B10 | S2 | 03 | R00 | ACF07 | 018 |  |  |  |  |  |  |  |  |
|  | 03 | **PAT RM-2** |  | 2011-08-02 | 2013-02-20 |  |  |  |  |  |  |  |  |  |  |  |  |  |  |  |  |  |  |  |  |  |  |  |  |  |  |  |  |  |  |  |  |  |  |  |
| T16P223001C0 |  | PT-16 ; 1st Fix, Inst. of Supports for MEP (PAT RM-2) | 53.88d | 2011-08-02 A | 2011-12-04 | T16CO07807C0 | 10% | 48.49d | 2011-08-25 | 2011-10-29 | 84.81d | 0d | MECHANICAL [800.4 h]; Cost [45150.4 AED] | 45,150.38 | 4,515.04 |  |  | T16P223001C0 | PT | C | 16 | P2 | ME | 230 | 01 | BILL 10 | B10 | S2 | 1F | R00 | ACF04 | 230 | 1S | MEP |  | 10 | 0 | M1F |  |  |
| T16P209201C0 |  | PT-16 ; Metal Studs (PAT RM-2) | 43d | 2011-09-05 A | 2012-06-13 | T16P223001C0, T16CO04407C0 FF, T16CO04405C0 FF, T16P223001C0 FF | 22% | 33.6d | 2012-05-02 | 2012-06-23 | 9d | 0d | PARTITIONS [2367 h]; PARTITIONS - Metal Studs [328 m]; Cost |  |  | 313 | 944 | T16P209201C0 | PT | C | 16 | P2 | PT | 092 | 01 | BILL 10 | B10 | S2 | 1F | R00 | ACF06 | 092 |  | GP |  |  |  | PMS | 20 |  |
| T16P226001C0 |  | PT-16 ; 1st Fix, Inst of Trunking/Conduiting (PAT RM-2) | 48d | 2011-12-04 | 2012-01-30 | T16CO07807C0, T16P223001C0 |  |  |  |  | 84.81d | 0d | ELECTRICAL [734.4 h]; Cost |  |  |  |  | T16P226001C0 | PT | C | 16 | P2 | ME | 260 | 01 | BILL 10 | B10 | S2 | 1F | R00 | ACF04 | 260 | 1S | MEP |  |  |  | M1F |  |  |
| T16P209702C0 |  | PT-16 ; Installation of Bathroom Pods (PAT RM-2) | 0d | 2011-12-11 | 2011-12-11 | T16P109702C0 SS, T16CO07807C0, AAFCI09201R02 FS+118d |  |  |  |  | 175.25d | 0d | Cost |  |  | 105 | 1002 | T10P109701C0 | PT | C | 16 | P2 | BP | 097 | 01 | BILL 10 | B10 | S2 | FG | R00 | ACF06 | 097 |  |  |  |  |  |  |  |  |
| T16P227010C0 |  | PT-16 ; 1st Fix, Inst of Trunking for ELV system (PAT RM-2) | 48d | 2011-12-18 | 2012-02-14 | T16CO07807C0, T16P223001C0, T16P226001C0 SS+12d |  |  |  |  | 84.81d | 0d | ELECTRICAL [1512 h]; Cost |  |  |  |  | T16P227010C0 | PT | C | 16 | P2 | ME | 270 | 10 | BILL 10 | B10 | S2 | 1F | R00 | ACF04 | 270 | 1S | MEP |  |  |  | M1F |  |  |
| T16P226013C0 |  | PT-16 ; 1st Fix, Inst of Cable Tray (PAT RM-2) | 48d | 2011-12-29 | 2012-02-26 | T16CO07807C0, T16P223001C0, T16P227010C0 SS+10d |  |  |  |  | 84.81d | 0d | ELECTRICAL [399.6 h]; Cost |  |  |  |  | T16P226013C0 | PT | C | 16 | P2 | ME | 260 | 13 | BILL 10 | B10 | S2 | 1F | R00 | ACF04 | 260 | 1S | MEP |  |  |  | M1F |  |  |
| T16P222019C0 |  | PT-16 ; 1st Fix, Inst of Drainage pipe (ceiling) (PAT RM-2) | 48d | 2012-01-14 | 2012-03-11 | T16P223001C0, T16P226013C0 SS+12d |  |  |  |  | 84.81d | 0d | PLUMBING [1378.8 h]; Cost |  |  |  |  | T16P222019C0 | PT | C | 16 | P2 | ME | 220 | 19 | BILL 10 | B10 | S2 | 1F | R00 | ACF04 | 220 | 1S | MEP |  |  |  | M1F |  |  |
| T16P222005C0 |  | PT-16 ; 1st Fix, Inst of Water supply pipe (ceiling) (PAT RM-2) | 60d | 2012-01-25 | 2012-04-05 | T16P222019C0 SS+10d, T16P223001C0 |  |  |  |  | 84.81d | 0d | PLUMBING [4548 h]; Cost |  |  |  |  | T16P222005C0 | PT | C | 16 | P2 | ME | 220 | 05 | BILL 10 | B10 | S2 | 1F | R00 | ACF04 | 220 | 1S | MEP |  |  |  | M1F |  |  |
| T16P221111C0 |  | PT-16 ; 1st Fix, Inst of Sprinkler main pipe (PAT RM-2) | 48d | 2012-02-09 | 2012-04-05 | T16P222005C0 SS+12d, T16P223001C0 |  |  |  |  | 84.81d | 0d | MECHANICAL [853.2 h]; Cost |  |  |  |  | T16P221111C0 | PT | C | 16 | P2 | ME | 211 | 11 | BILL 10 | B10 | S2 | 1F | R00 | ACF04 | 211 | 1S | MEP |  |  |  | M1F |  |  |
| T16P222007C0 |  | PT-16 ; 1st Fix, Inst of Medical Gas pipe (PAT RM-2) | 48d | 2012-02-23 | 2012-04-19 | T16P221111C0 SS+12d, T16P223001C0 |  |  |  |  | 104.81d | 95.81d | PLUMBING [1149.6 h]; Cost |  |  |  |  | T16P222007C0 | PT | C | 16 | P2 | ME | 220 | 07 | BILL 10 | B10 | S2 | 1F | R00 | ACF04 | 220 | 1S | MEP |  |  |  | M1F |  |  |
| T16P227001C0 |  | PT-16 ; 1st Fix, Wiring/ Cabling work (PAT RM-2) | 48d | 2012-02-26 | 2012-04-22 | T16P226001C0, T16P226013C0, T16P227010C0 |  |  |  |  | 132.81d | 123.81d | ELECTRICAL [392.4 h]; Cost |  |  |  |  | T16P227001C0 | PT | C | 16 | P2 | ME | 270 | 01 | BILL 10 | B10 | S2 | 1F | R00 | ACF04 | 270 | 1S | MEP |  |  |  | M1F |  |  |
| T16P223017C0 |  | PT-16 ; 1st Fix, Inst of CHW pipe (PAT RM-2) | 54d | 2012-05-17 | 2012-07-19 | T16P221111C0 SS+12d, T16P223001C0, T16P205503C0 FF+12d |  |  |  |  | 13d | 0d | MECHANICAL [2403.6 h]; Cost |  |  |  |  | T16P223017C0 | PT | C | 16 | P2 | ME | 230 | 17 | BILL 10 | B10 | S2 | 1F | R00 | ACF04 | 230 | 1S | MEP |  |  |  | M1F |  |  |
| T16P223023C0 |  | PT-16 ; 1st Fix, Inst of Main Ducting (PAT RM-2) | 52d | 2012-05-29 | 2012-07-29 | T16P223001C0, T16P223017C0 SS+10d |  |  |  |  | 13d | 0d | MECHANICAL [8022 h]; Cost |  |  |  |  | T16P223023C0 | PT | C | 16 | P2 | ME | 230 | 23 | BILL 10 | B10 | S2 | 1F | R00 | ACF04 | 230 | 1S | MEP |  |  |  | M1F |  |  |
| T16P223008C0 |  | PT-16 ; 1st Fix, Inst of VCD's/FD's (PAT RM-2) | 48d | 2012-06-05 | 2012-07-31 | T16P223023C0 SS+6d, T16P205503C0 FF+12d |  |  |  |  | 47d | 38d | MECHANICAL [1753.2 h]; Cost |  |  |  |  | T16P223008C0 | PT | C | 16 | P2 | ME | 230 | 08 | BILL 10 | B10 | S2 | 1F | R00 | ACF04 | 230 | 1S | MEP |  |  |  | M1F |  |  |
| T16P205503C0 |  | PT-16 ; Ceiling Support for medical equipment (PAT RM-2) | 18d | 2012-06-14 | 2012-07-05 | T16P209201C0, TAFCI22011R20 FS+79d |  |  |  |  | 13d | 0d | SECONDARY STEEL [72 h]; STRUCTURAL STEEL [29 T(Fe)]; Cost |  |  | 335 | 962 | D03EY05503C0 | PT | C | 16 | P2 | SW | 055 | 03 | BILL 10 | B10 | S2 | 03 | R00 | ACF03 | b |  |  |  |  |  |  |  |  |
| T16P205511C0 |  | PT-16 ; Wall reinforcement for MEP/Medical (PAT RM-2) | 18d | 2012-06-14 | 2012-07-05 | T16P209201C0, TAFCI22011R02 FS+79d |  |  |  |  | 21d | 12d | SECONDARY STEEL [31 h]; Cost |  |  |  |  | T16P205511C0 | PT | C | 16 | P2 | SW | 055 | 11 | BILL 10 | B10 | S2 | 03 | R00 | ACF03 | b |  |  |  |  |  |  |  |  |
| T16P208103C0 |  | PT-16 ; Door Frames (PAT RM-2) | 36d | 2012-06-14 | 2012-07-26 | T16P209201C0, GNHE08101C0 FS+126d |  |  |  |  | 27d | 18d | ASSORTED DOORS [215 h]; Cost |  |  | 316 | 947 | T16P208103C0 | PT | C | 16 | P2 | DO | 081 | 03 | BILL 10 | B10 | S2 | DF | R00 | ACF06 | 081 |  |  | 08 |  |  |  |  |  |
| T16P209203C0 |  | PT-16 ; Partitions 1st face (PAT RM-2) | 18d | 2012-06-14 | 2012-07-05 | T16P209201C0 |  |  |  |  | 21d | 12d | PARTITIONS [328 m]; PARTITIONS [1854 h]; Cost |  |  | 314 | 945 | T16P209203C0 | PT | C | 16 | P2 | PT | 092 | 03 | BILL 10 | B10 | S2 | 2F | R00 | ACF06 | 092 |  | GP |  |  |  | P1F |  |  |
| T16P221117C0 |  | PT-16 ; 1st Fix, Inst of Sprinkler branch pipe (PAT RM-2) | 48d | 2012-06-14 | 2012-08-09 | T16P209201C0, T16P221111C0, T16P205503C0 FF+12d |  |  |  |  | 39d | 30d | MECHANICAL [561.6 h]; Cost |  |  |  |  | T16P221117C0 | PT | C | 16 | P2 | ME | 211 | 17 | BILL 10 | B10 | S2 | 1F | R00 | ACF04 | 211 | 1S | MEP |  |  |  | M1F |  |  |
| T16P222011C0 |  | PT-16 ; 2nd Fix, Drainage/Water pipe (wall) (PAT RM-2) | 24d | 2012-06-14 | 2012-07-12 | T16P209201C0 |  |  |  |  | 9d | 0d | PLUMBING [1378.8 h]; Cost |  |  |  |  | T16P222011C0 | PT | C | 16 | P2 | ME | 220 | 11 | BILL 10 | B10 | S2 | 2F | R00 | ACF07 | 220 | 2n | MEP |  |  |  |  |  |  |
| T16P222015C0 |  | PT-16 ; 2nd Fix, Medical Gas pipe (PAT RM-2) | 24d | 2012-06-14 | 2012-07-12 | T16P209201C0, T16P222007C0 SS |  |  |  |  | 9d | 0d | PLUMBING [1149.6 h]; Cost |  |  |  |  | T16P222015C0 | PT | C | 16 | P2 | ME | 220 | 15 | BILL 10 | B10 | S2 | 2F | R00 | ACF07 | 220 | 2n | MEP |  |  |  |  |  |  |
| T16P226009C0 |  | PT-16 ; 2nd Fix, Inst of Wall conduites (PAT RM-2) | 24d | 2012-06-14 | 2012-07-12 | T16P209201C0 |  |  |  |  | 9d | 0d | ELECTRICAL [734.4 h]; Cost |  |  |  |  | T16P226009C0 | PT | C | 16 | P2 | ME | 260 | 09 | BILL 10 | B10 | S2 | 2F | R00 | ACF07 | 260 | 2n | MEP |  |  |  |  |  |  |
| T16P201005C0 |  | PT-16 ; 2nd, Wall Inspection by Consultant (PAT RM-2) | 6d | 2012-07-14 | 2012-07-19 | T16P222011C0, T16P222015C0, T16P226009C0 |  |  |  |  | 9d | 0d | Labor General [1.2 h]; Cost |  |  |  |  | T16P201005C0 | PT | C | 16 | P2 | ME | 010 | 05 | BILL 10 | B10 | S2 | WI | R00 | ACF07 | 010 | 2n | MEP |  |  |  |  |  |  |
| T16P209205C0 |  | PT-16 ; Partitions Closing (PAT RM-2) | 24d | 2012-07-21 | 2012-08-16 | T16P201005C0, T16P205511C0, T16P209203C0, T16P222005C0, T16P222019C0, TAFOA09214C1 FF, T16P209702C0 FF, T16P208103C0 FF |  |  |  |  | 9d | 0d | PARTITIONS [328 m]; PARTITIONS [2369 h]; Cost |  |  | 315 | 946 | T16P209205C0 | PT | C | 16 | P2 | PT | 092 | 05 | BILL 10 | B10 | S2 | FF | R00 | ACF06 | 092 |  | GP |  |  |  | P2F |  |  |
| T16P223009C0 |  | PT-16 ; 2nd Fix, Inst of VAV'S CHW connection (PAT RM-2) | 36d | 2012-07-21 | 2012-09-02 | T16P223017C0 |  |  |  |  | 15d | 2d | MECHANICAL [1450.8 h]; Cost |  |  |  |  | T16P223009C0 | PT | C | 16 | P2 | ME | 230 | 09 | BILL 10 | B10 | S2 | 2F | R00 | ACF07 | 230 | 2n | MEP |  |  |  |  |  |  |
| T16P223015C0 |  | PT-16 ; 2nd Fix, Insulation of CHW pipe & Duct (PAT RM-2) | 36d | 2012-07-30 | 2012-09-11 | T16P223009C0 SS+6d, T16P223017C0, T16P223023C0 |  |  |  |  | 13d | 4d | MECHANICAL [3064.8 h]; Cost |  |  |  |  | T16P223015C0 | PT | C | 16 | P2 | ME | 230 | 15 | BILL 10 | B10 | S2 | 2F | R00 | ACF07 | 230 | 2n | MEP |  |  |  |  |  |  |
| T16P207103C0 |  | PT-16 ; Waterproofing (PAT RM-2) | 11.88d | 2012-08-18 | 2012-09-02 | T16P208103C0, T16P209205C0 |  |  |  |  | 53.13d | 32.12d | THERMAL & MOISTURE [384 h]; THERMAL & MOISTURE [2509 m2]; Cost |  |  | 105 | 999 | T16P207103C0 | PT | C | 16 | P2 | FF | 071 | 03 | BILL 10 | B10 | S2 | 01 | R00 | ACF03 | 071 |  |  |  |  |  |  |  |  |
| T16P209901C0 |  | PT-16 ; Wall Prime & 1st coat (PAT RM-2) | 24d | 2012-08-18 | 2012-09-16 | T16P209205C0 |  |  |  |  | 9d | 0d | WALL PAINT [415 h]; WALL PAINT [517 m2]; Cost |  |  | 328 | 956 | T16P209901C0 | PT | C | 16 | P2 | PA | 099 | 01 | BILL 10 | B10 | S2 | 01 | R00 | ACF06 | 099 |  |  |  |  |  |  |  |  |
| T16P226005C0 |  | PT-16 ; 2nd Fix, Wiring for Power/Lighting/Emergency (PAT RM-2) | 42d | 2012-08-18 | 2012-10-07 | T16P209205C0 |  |  |  |  | 23d | 0d | ELECTRICAL [392.4 h]; Cost |  |  |  |  | T16P226005C0 | PT | C | 16 | P2 | ME | 260 | 05 | BILL 10 | B10 | S2 | 2F | R00 | ACF07 | 260 | 2n | MEP |  |  |  |  |  |  |
| T16P226007C0 |  | PT-16 ; 2nd Fix, Cable Pulling (PAT RM-2) | 48d | 2012-08-18 | 2012-10-14 | T16P209201C0 SS+6d, T16P209205C0 |  |  |  |  | 59d | 50d | ELECTRICAL [2683.2 h]; Cost |  |  |  |  | T16P226007C0 | PT | C | 16 | P2 | ME | 260 | 07 | BILL 10 | B10 | S2 | 2F | R00 | ACF07 | 260 | 2n | MEP |  |  |  |  |  |  |
| T16P226011C0 |  | PT-16 ; 2nd Fix, Inst of Equipment (DB) (PAT RM-2) | 54d | 2012-08-18 | 2012-10-21 | T16P209205C0 |  |  |  |  | 41d | 20d | ELECTRICAL [878.4 h]; Cost |  |  |  |  | T16P226011C0 | PT | C | 16 | P2 | ME | 260 | 11 | BILL 10 | B10 | S2 | 2F | R00 | ACF04 | 260 | 2n | MEP |  |  |  |  |  | E |
| T16P226053C0 |  | PT-16 ; 2nd Fix, Wiring / Cabling (PAT RM-2) | 24d | 2012-08-18 | 2012-09-16 | T16P209203C0, T16P209205C0 |  |  |  |  | 29d | 20d | ELECTRICAL [392.4 h]; Cost |  |  | 389 | 977 | T16P226053C0 | PT | C | 16 | P2 | ME | 260 | 53 | BILL 10 | B10 | S2 | 2F | R00 | ACF07 | 260 | 2n | MEP |  |  |  |  |  |  |
| T16P227020C0 |  | PT-16 ; 2nd Fix, Inst of ELV Equipment (Panels) (PAT RM-2) | 66d | 2012-08-18 | 2012-11-06 | T16P209205C0 |  |  |  |  | 29d | 8d | ELECTRICAL [1819.2 h]; Cost |  |  |  |  | T16P227020C0 | PT | C | 16 | P2 | ME | 270 | 20 | BILL 10 | B10 | S2 | 2F | R00 | ACF04 | 270 | 2n | MEP |  |  |  |  |  | E |
| T16P205501C0 |  | PT-16 ; Handrails & balustrade (PAT RM-2) | 30.5d | 2012-09-17 | 2012-10-22 | T16P209901C0 |  |  |  |  | 82.5d | 73.5d | SECONDARY STEEL [174 h]; Cost |  |  |  |  | T16P205501C0 | PT | C | 16 | P2 | SW | 055 | 01 | BILL 10 | B10 | S2 | 01 | R00 | ACF03 | a |  |  |  |  |  |  |  |  |
| T16P209501C0 |  | PT-16 ; Ceiling Grid and Service Tile (PAT RM-2) | 20d | 2012-09-17 | 2012-10-09 | T16P205503C0, T16P209205C0 SS+15d, T16P221117C0, T16P223008C0, T16P223009C0, T16P223015C0, T16P227001C0, T16P226053C0 FF, T16P209901C0 |  |  |  |  | 9d | 0d | CEILING GRID FOR GYPSUM [3691.46 h]; CEILING GRID FOR GYPSUM [315.76 m2]; Cost |  |  | 323 | 952 | T16P209501C0 | PT | C | 16 | P2 | CE | 095 | 01 | BILL 10 | B10 | S2 | 01 | R00 | ACF06 | 095 |  |  |  |  |  |  |  |  |
| T16P209510C0 |  | PT-16 ; Patient Lift Ceiling Rail (by others) (PAT RM-2) | 29.88d | 2012-09-17 | 2012-10-21 | T16P209501C0 SS |  |  |  |  | 53.13d | 44.12d | Labor General [0.2 h]; Cost |  |  | 323 | 952 | I06P109501C0 | PT | C | 16 | P2 | CE | 095 | 10 | BILL 10 | B10 | S2 | 02 | R00 | ACF06 | 095 |  |  |  |  |  |  |  |  |
| T16P226015C0 |  | PT-16 ; Final Fix, Termination & Gladding of Cables (PAT RM-2) | 36d | 2012-10-08 | 2012-11-21 | T16P226005C0 |  |  |  |  | 23d | 3d | ELECTRICAL [148.8 h]; Cost |  |  |  |  | T16P226015C0 | PT | C | 16 | P2 | ME | 260 | 15 | BILL 10 | B10 | S2 | FF | R00 | ACF07 | 260 | FF | MEP |  |  |  |  |  |  |
| T16P209305C0 |  | PT-16 ; Flooring (Terrazzo) (PAT RM-2) | 30d | 2012-10-10 | 2012-11-17 | T16P207103C0, T16P209501C0, SV10AF08108R2 FF |  |  |  |  | 21d | 0d | TERRAZO FLOOR [1073 m2]; TERRAZO FLOOR [1936 h]; Cost |  |  | 106 | 1000 | T16P209305C0 | PT | C | 16 | P2 | FF | 096 | 05 | BILL 10 | B10 | S2 | 07 | R00 | ACF06 | TZ |  |  |  |  |  |  |  |  |
| T16P209601C0 |  | PT-16 ; Flooring (Rubber & etc) (PAT RM-2) | 24d | 2012-10-10 | 2012-11-08 | T16P209501C0 |  |  |  |  | 9d | 0d | RUBBER FLOOR [24 h]; RUBBER FLOOR [58 m2]; Cost |  |  | 326 | 955 | T16P209601C0 | PT | C | 16 | P2 | FF | 096 | 01 | BILL 10 | B10 | S2 | 03 | R00 | ACF06 | RF |  |  |  |  |  |  |  |  |
| T16P209905C0 |  | PT-16 ; Ceiling Prime & 1st coat (PAT RM-2) | 30d | 2012-10-10 | 2012-11-17 | T16P209501C0 |  |  |  |  | 33d | 0d | CEILING PAINT [28 h]; CEILING PAINT [33 m2]; Cost |  |  | 330 | 958 | T16P209905C0 | PT | C | 16 | P2 | PA | 099 | 05 | BILL 10 | B10 | S2 | 01 | R00 | ACF06 | 099 |  |  |  |  |  |  |  |  |
| T16P221115C0 |  | PT-16 ; 2nd Fix, Inst of Sprinkler droppers (PAT RM-2) | 30d | 2012-10-10 | 2012-11-17 | T16P209501C0 |  |  |  |  | 21d | 0d | MECHANICAL [1602 h]; Cost |  |  |  |  | T16P221115C0 | PT | C | 16 | P2 | ME | 211 | 15 | BILL 10 | B10 | S2 | 2F | R00 | ACF07 | 211 | 2n | MEP |  |  |  |  |  |  |
| T16P223021C0 |  | PT-16 ; 2nd Fix, Inst of Flexible Duct & Plenum boxes (PAT RM-2) | 24d | 2012-10-10 | 2012-11-08 | T16P209205C0, T16P209501C0 |  |  |  |  | 21d | 0d | MECHANICAL [30 h]; Cost |  |  |  |  | T16P223021C0 | PT | C | 16 | P2 | ME | 230 | 21 | BILL 10 | B10 | S2 | 2F | R00 | ACF07 | 230 | 2n | MEP |  |  |  |  |  |  |
| T16P226017C0 |  | PT-16 ; Final Fix, Inst of Ceiling rose (PAT RM-2) | 36d | 2012-10-10 | 2012-11-24 | T16P209501C0 |  |  |  |  | 21d | 0d | ELECTRICAL [61.2 h]; Cost |  |  |  |  | T16P226017C0 | PT | C | 16 | P2 | ME | 260 | 17 | BILL 10 | B10 | S2 | FF | R00 | ACF07 | 260 | FF | MEP |  |  |  |  |  |  |
| T16P227002C0 |  | PT-16 ; 2nd Fix, Wiring Droppers (PAT RM-2) | 30d | 2012-10-10 | 2012-11-17 | T16P209501C0 |  |  |  |  | 20d | 0d | ELECTRICAL [392.4 h]; Cost |  |  |  |  | T16P227002C0 | PT | C | 16 | P2 | ME | 270 | 02 | BILL 10 | B10 | S2 | 2F | R00 | ACF07 | 270 | 2n | MEP |  |  |  |  |  |  |
| T16P240303C0 |  | PT-16 ; Final Fix, Pneumatic Station (PAT RM-2) | 36d | 2012-10-10 | 2012-11-24 | T16P209501C0 |  |  |  |  | 45d | 36d | MECHANICAL [2974.8 h]; Cost |  |  |  |  | T16P240303C0 | PT | C | 16 | P2 | ME | 403 | 03 | BILL 10 | B10 | S2 | FF | R00 | ACF07 | 403 | FF | MEP |  |  |  |  |  |  |
| T16P221113C0 |  | PT-16 ; Final Fix, Inst of Sprinklers head/ Extinguisher (PAT RM-2) | 30d | 2012-10-17 | 2012-11-24 | T16P209501C0, T16P221115C0 SS+6d |  |  |  |  | 21d | 1d | MECHANICAL [234 h]; Cost |  |  |  |  | T16P221113C0 | PT | C | 16 | P2 | ME | 211 | 13 | BILL 10 | B10 | S2 | FF | R00 | ACF07 | 211 | FF | MEP |  |  |  |  |  |  |
| T16P223019C0 |  | PT-16 ; Final Fix, Inst of Grilles & Diffusers (PAT RM-2) | 30d | 2012-10-17 | 2012-11-24 | T16P209501C0, T16P223021C0 SS+6d |  |  |  |  | 21d | 1d | MECHANICAL [1498.8 h]; Cost |  |  |  |  | T16P223019C0 | PT | C | 16 | P2 | ME | 230 | 19 | BILL 10 | B10 | S2 | FF | R00 | ACF07 | 230 | FF | MEP |  |  |  |  |  |  |
| T16P226003C0 |  | PT-16 ; Final Fix, Inst of Light fittings (PAT RM-2) | 30d | 2012-10-17 | 2012-11-24 | T16P209501C0, T16P226017C0 SS+6d |  |  |  |  | 21d | 1d | ELECTRICAL [7815.6 h]; Cost |  |  |  |  | T16P226003C0 | PT | C | 16 | P2 | ME | 260 | 03 | BILL 10 | B10 | S2 | FF | R00 | ACF07 | 260 | FF | MEP |  |  |  |  |  |  |
| T16P227030C0 |  | PT-16 ; Final Fix, Inst of ELV device (Detector/Speaker) (PAT RM-2) | 30d | 2012-10-18 | 2012-11-25 | T16P209501C0, T16P227002C0 SS+7d |  |  |  |  | 20d | 0d | ELECTRICAL [3571.2 h]; Cost |  |  |  |  | T16P227030C0 | PT | C | 16 | P2 | ME | 270 | 30 | BILL 10 | B10 | S2 | FF | R00 | ACF07 | 270 | FF | MEP |  |  |  |  |  |  |
| T16P206101C0 |  | PT-16 ; Wood / caseworks (PAT RM-2) | 30d | 2012-11-10 | 2012-12-16 | T15P206101C0 SS, T16CO04407C0, T16P209501C0, T16P209601C0, T16P209901C0, TAFWA00101M0 |  |  |  |  | 9d | 0d | WOOD WORK/CASEWORK [659.26 no]; WOOD WORK/CASEWORK [1445 h]; Cost |  |  | 332 | 960 | T16P206101C0 | PT | C | 16 | P2 | WO | 061 | 01 | BILL 10 | B10 | S2 | WW | R00 | ACF06 | 061 |  |  |  |  |  |  |  |  |
| T16P206102C0 |  | PT-16 ; Head/Foot Wall (PAT RM-2) | 30d | 2012-11-10 | 2012-12-16 | T16CO04407C0, T16P209501C0, TAFWA00101M0, T16P206101C0 SS |  |  |  |  | 9d | 0d | WOOD WORK/CASEWORK [1649 h]; Cost |  |  | 332 | 960 | T16P206102C0 | PT | C | 16 | P2 | WO | 061 | 02 | BILL 10 | B10 | S2 | WW | R00 | ACF06 | 061 |  |  |  |  |  |  |  |  |

| ID | WBS | Activity | Duration | Start | Finish | Predecessors | Complete | Remaining | Planned start | Planned finish | Total float | Free float | Resources | Change Order # | NEW ACTIVITY ID | change id | CCAD BUILDING(SET) | CCAD PHASE(SET) | CCAD DIVISION(SET) | CCAD FLOOR(SET) | CCAD ZONE(SET) | CCAD WORK(SET) | CCAD SECTION(SET) | CCAD SERIAL No.(SET) | CCAD CBS(SET) | CCAD BILL(SET) | CCAD HANDOVER(SET) | CCAD TAG(SET) | CCAD REV(SET) | CCADACF (SET) | CCAD SSCF | CCAD SUB ZONE MEP(SET) | CCAD CSA | Act Selector % | CCAD MEQ | IDDD |
| --- | --- | --- | --- | --- | --- | --- | --- | --- | --- | --- | --- | --- | --- | --- | --- | --- | --- | --- | --- | --- | --- | --- | --- | --- | --- | --- | --- | --- | --- | --- | --- | --- | --- | --- | --- | --- |
| T16P208107C0 |  | PT-16 ; Doors (PAT RM-2) | 36d | 2012-11-10 | 2012-12-23 | T16P208103C0, T16P209501C0, T16P209601C0, T16P209901C0 |  |  |  |  | 15d | 0d | ASSORTED DOORS [430 h]; ASSORTED DOORS [43 no]; Cost | 317 | 948 | T16P208107C0 | PT | C | 08 | 16 | P2 | DO | 081 | 07 | BILL 10 | B10 | S2 | DR | R00 | ACF06 | 081 |  |  |  |  |  |
| T16P209701C0 |  | PT-16 ; Wall finishes (ST, WD, WC) (PAT RM-2) | 24d | 2012-11-18 | 2012-12-16 | T16P226011C0, T16P227020C0, T16P209501C0, T16P209601C0, T16P209305C0 |  |  |  |  | 21d | 0d | ASSORTED WALL FINISH [369 h]; ASSORTED WALL FINISH [423 m2]; Cost | 105 | 1002 | T16P209701C0 | PT | C |  | 16 | P2 | WF | 097 | 01 | BILL 10 | B10 | S2 | 01 | R00 | ACF06 | 097 |  |  |  |  |  |
| T16P209903C0 |  | PT-16 ; Wall Final Paint (PAT RM-2) | 30d | 2012-11-18 | 2012-12-23 | T16P209901C0, T16P209905C0, T16P209501C0 |  |  |  |  | 33d | 24d | WALL PAINT [225 h]; WALL PAINT [279 m2]; Cost | 329 | 957 | T16P209903C0 | PT | C |  | 16 | P2 | PA | 099 | 03 | BILL 10 | B10 | S2 | 02 | R00 | ACF06 | 099 |  |  |  |  |  |
| T16P222021C0 |  | PT-16 ; Final Fix, Terminate Sanitary Ware & Appliances (PAT RM-2) | 30d | 2012-11-18 | 2012-12-23 | T16P222011C0, T16P222025C0 SS |  |  |  |  | 21d | 12d | PLUMBING [3361.2 h]; Cost |  |  | T16P222021C0 | PT | C |  | 16 | P2 | ME | 220 | 21 | BILL 10 | B10 | S2 | FF | R00 | ACF07 | 220 | FF | MEP |  |  |  |
| T16P222025C0 |  | PT-16 ; Final Fix, Inst of Sanitary Ware (PAT RM-2) | 30d | 2012-11-18 | 2012-12-23 | T16P209205C0, T16P209305C0 |  |  |  |  | 21d | 0d | PLUMBING [3361.2 h]; Cost |  |  | T16P222025C0 | PT | C |  | 16 | P2 | ME | 220 | 25 | BILL 10 | B10 | S2 | FF | R00 | ACF07 | 220 | FF | MEP |  |  |  |
| T16P201006C0 |  | PT-16 ; 2nd, Ceiling Inspection by Consultants (PAT RM-2) | 6d | 2012-11-26 | 2012-12-02 | T16P221115C0, T16P223009C0, T16P223015C0, T16P227002C0, T16P209501C0, T16P221113C0, T16P223019C0, T16P226015C0, T16P226017C0, T16P226003C0, T16P227030C0 |  |  |  |  | 20d | 11d | Labor General [1.2 h]; Cost |  |  | T16P201006C0 | PT | C |  | 16 | P2 | ME | 010 | 06 | BILL 10 | B10 | S2 | CI | R00 | ACF07 | 010 | 2n | MEP |  |  |  |
| T16P209503C0 |  | PT-16 ; Ceiling closure - ACT/Gypsum (PAT RM-2) | 18d | 2012-12-17 | 2013-01-07 | T16P201006C0, T16P209510C0, T16P221115C0, T16P226005C0, T16P227001C0, T16P227002C0, TAFOA09513C1 FF, T16P206101C0, T16P223021C0, T16P226007C0 |  |  |  |  | 9d | 0d | ASSORTED CEILING FINISH [416.36 h]; CEILING GYPSUM [103.53 h]; ASSORTED CEILING FINISH [677 m2]; CEILING GYPSUM [316 m2]; Cost | 324 | 953 | T16P209503C0 | PT | C |  | 16 | P2 | CE | 095 | 03 | BILL 10 | B10 | S2 | 02 | R00 | ACF06 | 095 |  |  |  |  |  |
| T16P211001C0 |  | PT-16 ; Wall Protection (WP, CG, WG, FCG) (PAT RM-2) | 18d | 2012-12-17 | 2013-01-07 | T16P209701C0, T16P209903C0 SS |  |  |  |  | 21d | 12d | FF&E [18 h]; Cost | 326 | 1001 | T16P211001C0 | PT | C |  | 16 | P2 | WF | 110 | 01 | BILL 10 | B10 | S2 | 03 | R00 | ACF08 | b |  |  |  |  |  |
| T16P222029C0 |  | PT-16 ; Final Fix, Medical Gas pipe (PAT RM-2) | 18d | 2012-12-17 | 2013-01-07 | T16P209501C0, T16P206102C0 |  |  |  |  | 9d | 0d | PLUMBING [1149.6 h]; Cost |  |  | T16P222029C0 | PT | C |  | 16 | P2 | ME | 220 | 29 | BILL 10 | B10 | S2 | FF | R00 | ACF07 | 220 | FF | MEP |  |  |  |
| T16P208709C0 |  | PT-16 ; Ironmongery (PAT RM-2) | 18d | 2012-12-24 | 2013-01-14 | T16P208107C0, SV10AF08107R2 FF |  |  |  |  | 15d | 6d | IRONMONGERY [610 h]; IRONMONGERY [61 no]; Cost | 322 | 951 | T16P208709C0 | PT | C | 08 | 16 | P2 | DO | 087 | 09 | BILL 10 | B10 | S2 | IM | R00 | ACF06 | 087 |  |  |  |  |  |
| T16P209686C1 |  | PT-16, Carpet Tile Finish (Patient Room-2) | 0d | 2013-01-08 | 2013-01-08 | T16P209907C0 SS, T16P209903C0 SS |  |  |  |  | 21d | 12d | Cost |  |  |  | PT | C |  | 16 | P2 | FF | 096 |  |  | B10 |  |  | R00 | ACF06 | CPT |  | CPT |  |  |  |
| T16P209907C0 |  | PT-16 ; Ceiling Final paint (PAT RM-2) | 12d | 2013-01-08 | 2013-01-21 | T16P209601C0, T16P209905C0, T16P209503C0 |  |  |  |  | 9d | 0d | CEILING PAINT [15 h]; CEILING PAINT [18 m2]; Cost | 331 | 959 | T16P209907C0 | PT | C |  | 16 | P2 | PA | 099 | 07 | BILL 10 | B10 | S2 | 02 | R00 | ACF06 | 099 |  |  |  |  |  |
| T16P211003C0 |  | PT-16 ; FF & E (PAT RM-2) | 12d | 2013-01-08 | 2013-01-21 | T16P209601C0, T16P206101C0, T16P209503C0 |  |  |  |  | 9d | 0d | FF&E [715 h]; Cost | 333 | 961 | T16P211003C0 | PT | C |  | 16 | P2 | WO | 110 | 03 | BILL 10 | B10 | S2 | 04 | R00 | ACF08 | a |  |  |  |  |  |
| T16P222027C0 |  | PT-16 ; Final Fix, Inst of All drain (PAT RM-2) | 12d | 2013-01-08 | 2013-01-21 | T16P209305C0, T16P209503C0 |  |  |  |  | 9d | 0d | PLUMBING [1378.8 h]; Cost |  |  | T16P222027C0 | PT | C |  | 16 | P2 | ME | 220 | 27 | BILL 10 | B10 | S2 | FF | R00 | ACF07 | 220 | FF | MEP |  |  |  |
| T16P226019C0 |  | PT-16 ; Final Fix, Inst of Switch/Sockets (PAT RM-2) | 12d | 2013-01-08 | 2013-01-21 | T16P209901C0, T16P209503C0 |  |  |  |  | 9d | 0d | ELECTRICAL [316.8 h]; Cost |  |  | T16P226019C0 | PT | C |  | 16 | P2 | ME | 260 | 19 | BILL 10 | B10 | S2 | FF | R00 | ACF07 | 260 | FF | MEP |  |  |  |
|  | 10 | **Precommissioning Tesing & snagging (PAT RM-2)** |  | 2013-01-08 | 2013-02-20 |  |  |  |  |  |  |  |  |  |  |  |  |  |  |  |  |  |  |  |  |  |  |  |  |  |  |  |  |  |  |  |
| T16TS01804C0 |  | PT-16 ; MEP de-snag, FIREM sign-off | 12d | 2013-01-08 | 2013-01-21 | T16P222025C0, T16P226015C0, T16P222021C0, T16P221113C0, T16P223019C0, T16P240303C0, T16P222029C0, T16P226017C0, T16P226003C0, T16P227030C0 |  |  |  |  | 9d | 0d | TESTING & COMMISSIONING [510 h]; Cost |  |  | T16TS01801C0 | PT | C |  | 16 | TS | SC | 018 | 01 | BILL 10 | B10 | S2 | 01 | R00 | ACF07 | 018 |  |  |  |  |  |
| T16TS01809C0 |  | PT-16 ; Touch-up & Clean / JV inspection /CIR /De-snag | 18d | 2013-01-22 | 2013-02-12 | T16P205501C0, T16P206101C0, T16P206102C0, T16P208709C0, T16P209305C0, T16P209601C0, T16P209701C0, T16P209903C0, T16P209907C0, T16P211001C0, T16P211003C0, T16TS01804C0, T16P209503C0, T16P226019C0, T16P222027C0, T16P209686C1 |  |  |  |  | 9d | 0d | TESTING & COMMISSIONING [128 h]; Cost |  |  | T16TS01802C0 | PT | C |  | 16 | TS | SC | 018 | 02 | BILL 10 | B10 | S2 | 02 | R00 | ACF07 | 018 |  |  |  |  |  |
| T16TS01814C0 |  | PT-16 ; Consultant's final de-snag inspection | 7d | 2013-02-13 | 2013-02-20 | T16TS01809C0 |  |  |  |  | 9d | 0d | Labor General [1 h]; Cost |  |  | T16TS01803C0 | PT | C |  | 16 | TS | SC | 018 | 03 | BILL 10 | B10 | S2 | 03 | R00 | ACF07 | 018 |  |  |  |  |  |
|  | 05 | **TR Room** |  | 2011-09-05 | 2012-11-17 |  |  |  |  |  |  |  |  |  |  |  |  |  |  |  |  |  |  |  |  |  |  |  |  |  |  |  |  |  |  |  |
| T16TR09201C0 |  | PT-16 ; Metal Studs (TR RM) | 18d | 2011-09-05 A | 2011-12-22 | T16PA09201C0 SS | 10% | 16.2d | 2011-11-15 | 2011-12-08 | 60.74d | 0d | PARTITIONS [231 h]; PARTITIONS - Metal Studs [32 m]; Cost | 313 | 885 | T16TR09201C0 | PT | C |  | 16 | TR | PT | 092 | 01 | BILL 10 | B10 | S2 | 1F | R00 | ACF06 | 092 |  | GP | PMS |  |  |
| T16TR09203C0 |  | PT-16 ; Partitions 1st face (TR RM) | 24d | 2011-12-22 | 2012-01-21 | T16TR09201C0 |  |  |  |  | 78.74d | 62.8d | PARTITIONS [32 m]; PARTITIONS [177 h]; Cost | 314 | 886 | T16TR09203C0 | PT | C |  | 16 | TR | PT | 092 | 03 | BILL 10 | B10 | S2 | 2F | R00 | ACF06 | 092 |  | GP | P1F |  |  |
| T16TR26026C0 |  | PT-16 ; 2nd Fix, Conduit (TR RM) | 30d | 2011-12-22 | 2012-01-28 | T16TR09201C0 |  |  |  |  | 60.74d | 0d | ELECTRICAL [734.4 h]; Cost |  |  | T16TR26026C0 | PT | C |  | 16 | TR | ME | 260 | 26 | BILL 10 | B10 | S2 | 2F | R00 | ACF07 | 260 | 2n | MEP |  |  |  |
| T16TR08101C0 |  | PT-16 ; Door Frames (TR RM) | 18d | 2011-12-28 | 2012-01-18 | T16TR09201C0, GNHE08101C0 FS+126d |  |  |  |  | 110.12d | 94.19d | ASSORTED DOORS [19 h]; Cost | 316 | 20001090 | T16TR08101C0 | PT | C | 08 | 16 | TR | DO | 081 | 01 | BILL 10 | B10 | S2 | DF | R00 | ACF06 | 081 |  |  |  |  |  |
| T16TR01005C0 |  | PT-16 ; 2nd, Wall Inspection by Consultant (TR RM) | 12d | 2012-01-28 | 2012-02-12 | T16TR26026C0 |  |  |  |  | 60.74d | 44.8d | Labor General [1.2 h]; Cost |  |  | T16TR01005C0 | PT | C |  | 16 | TR | ME | 010 | 05 | BILL 10 | B10 | S2 | WI | R00 | ACF07 | 010 | 2n | MEP |  |  |  |
| T16TR09205C0 |  | PT-16 ; Partitions Closing (TR RM) | 30d | 2012-04-04 | 2012-05-09 | T16TR01005C0, T16TR09201C0, T16TR09203C0, TAFOA09214C1 FF, T16TR08101C0 FF, T16PA09205C0 SS |  |  |  |  | 15.94d | 0d | PARTITIONS [32 m]; PARTITIONS [235 h]; Cost | 315 | 887 | T16TR09205C0 | PT | C |  | 16 | TR | PT | 092 | 05 | BILL 10 | B10 | S2 | FF | R00 | ACF06 | 092 |  | GP | P2F |  |  |
| T16TR09901C0 |  | PT-16 ; Wall Prime & 1st coat (TR RM) | 18d | 2012-05-09 | 2012-05-30 | T16TR09205C0 |  |  |  |  | 15.94d | 0d | WALL PAINT [37 h]; WALL PAINT [45 m2]; Cost | 360 | 20001110 | T16TR09901C0 | PT | C |  | 16 | TR | PA | 099 | 01 | BILL 10 | B10 | S2 | 01 | R00 | ACF06 | 099 |  |  |  |  |  |
| T16TR23009C0 |  | PT-16 ; 2nd Fix, Inst of VAV'S CHW connection (TR RM) | 36d | 2012-05-09 | 2012-06-21 | T16TR09205C0 |  |  |  |  | 22.06d | 0d | MECHANICAL [1450.8 h]; Cost |  |  | T16TR23009C0 | PT | C |  | 16 | TR | ME | 230 | 09 | BILL 10 | B10 | S2 | 2F | R00 | ACF07 | 230 | 2n | MEP |  |  |  |
| T16TR23011C0 |  | PT-16 ; 2nd Fix, Inst of VCD's/FD's (TR RM) | 36d | 2012-05-09 | 2012-06-21 | T16TR09205C0 |  |  |  |  | 22.06d | 0d | MECHANICAL [1753.2 h]; Cost |  |  | T16TR23011C0 | PT | C |  | 16 | TR | ME | 230 | 11 | BILL 10 | B10 | S2 | 2F | R00 | ACF07 | 230 | 2n | MEP |  |  |  |
| T16TR26007C0 |  | PT-16 ; 2nd Fix, Cable Pulling (TR RM) | 36d | 2012-05-09 | 2012-06-21 | T16TR09203C0, T16TR09205C0 |  |  |  |  | 46.06d | 24d | ELECTRICAL [2683.2 h]; Cost |  |  | T16TR26007C0 | PT | C |  | 16 | TR | ME | 260 | 07 | BILL 10 | B10 | S2 | 2F | R00 | ACF07 | 260 | 2n | MEP |  |  |  |
| T16TR26009C0 |  | PT-16 ; 2nd Fix, Inst of Equipment (DB, TR, SG,BUS) (TR RM) | 54d | 2012-05-09 | 2012-07-12 | T16TR09205C0 |  |  |  |  | 21.94d | 0d | ELECTRICAL [3943.2 h]; Cost |  |  | T16TR26009C0 | PT | C |  | 16 | TR | ME | 260 | 09 | BILL 10 | B10 | S2 | 2F | R00 | ACF04 | 260 | 2n | MEP |  | E |  |
| T16TR26027C0 |  | PT-16 ; 2nd Fix, Wiring / Cabling (TR RM) | 30d | 2012-05-09 | 2012-06-13 | T16TR09203C0, T16TR09205C0 |  |  |  |  | 63.94d | 48d | ELECTRICAL [392.4 h]; Cost | 417 | 1318 | T16TR26027C0 | PT | C |  | 16 | TR | ME | 260 | 27 | BILL 10 | B10 | S2 | 2F | R00 | ACF07 | 260 | 2n | MEP |  |  |  |
| T16TR09501C0 |  | PT-16 ; Ceiling Grid and Service Tile (TR RM) | 24d | 2012-05-30 | 2012-06-28 | T16TR09205C0 SS+15d, T16TR09901C0 |  |  |  |  | 15.94d | 0d | CEILING GRID FOR GYPSUM [297.07 h]; CEILING GRID FOR GYPSUM [25.26 m2]; Cost | 336 | 1327 | T16TR09501C0 | PT | C |  | 16 | TR | CE | 095 | 01 | BILL 10 | B10 | S2 | 01 | R00 | ACF06 | 095 |  |  |  |  | 1 |
| T16TR09903C0 |  | PT-16 ; Wall - Final Paint (TR RM) | 12d | 2012-05-30 | 2012-06-13 | T16TR09901C0 |  |  |  |  | 107.94d | 92d | WALL PAINT [20 h]; WALL PAINT [24 m2]; Cost | 361 | 1312 | T16TR09903C0 | PT | C |  | 16 | TR | PA | 099 | 03 | BILL 10 | B10 | S2 | 02 | R00 | ACF06 | 099 |  |  |  |  |  |
| T16TR23013C0 |  | PT-16 ; 2nd Fix, Insulation of CHW pipe & Duct (TR RM) | 24d | 2012-06-21 | 2012-07-19 | T16TR23009C0, T16TR23011C0 |  |  |  |  | 22.06d | 0d | MECHANICAL [3064.8 h]; Cost |  |  | T16TR23013C0 | PT | C |  | 16 | TR | ME | 230 | 13 | BILL 10 | B10 | S2 | 2F | R00 | ACF07 | 230 | 2n | MEP |  |  |  |
| T16TR09601C0 |  | PT-16 ; Floor Finishes (TR RM) | 18d | 2012-06-28 | 2012-07-19 | T16TR09501C0 |  |  |  |  | 15.94d | 0d | ASSORTED FLOOR FINISH [1248 h]; ASSORTED FLOOR FINISH [693 m2]; Cost | 359 | 20001120 | T16TR09601C0 | PT | C |  | 16 | TR | FF | 096 | 01 | BILL 10 | B10 | S2 | 01 | R00 | ACF06 | FF |  |  |  |  |  |
| T16TR09905C0 |  | PT-16 ; Ceiling Prime & 1st coat (TR RM) | 16.75d | 2012-06-28 | 2012-07-17 | T16TR09501C0 |  |  |  |  | 67.19d | 33.25d | CEILING PAINT [4 h]; CEILING PAINT [3 m2]; Cost | 362 | 1313 | T16TR09905C0 | PT | C |  | 16 | TR | PA | 099 | 05 | BILL 10 | B10 | S2 | 01 | R00 | ACF06 | 099 |  |  |  |  |  |
| T16TR23003C0 |  | PT-16 ; Final Fix, Inst of Grilles & Diffusers (TR RM) | 30d | 2012-06-28 | 2012-08-02 | T16TR09501C0 |  |  |  |  | 21.94d | 6d | MECHANICAL [1498.8 h]; Cost |  |  | T16TR23003C0 | PT | C |  | 16 | TR | ME | 230 | 03 | BILL 10 | B10 | S2 | FF | R00 | ACF07 | 230 | FF | MEP |  |  |  |
| T16TR23023C0 |  | PT-16 ; 2nd Fix, Flexible ducts (TR RM) | 30d | 2012-06-28 | 2012-08-02 | T16TR09205C0, T16TR09501C0 |  |  |  |  | 21.94d | 6d | MECHANICAL [30 h]; Cost | 412 | 20001140 | T16TR23023C0 | PT | C |  | 16 | TR | ME | 230 | 23 | BILL 10 | B10 | S2 | 2F | R00 | ACF07 | 230 | 2n | MEP |  |  |  |
| T16TR23074C0 |  | PT-16 ; Final Fix, Grilles, panels & diffusers (TR RM) | 30d | 2012-06-28 | 2012-08-02 | T16TR09501C0 |  |  |  |  | 21.94d | 6d | MECHANICAL [1498.8 h]; Cost | 419 | 20001160 | T16TR23074C0 | PT | C |  | 16 | TR | ME | 230 | 74 | BILL 10 | B10 | S2 | FF | R00 | ACF07 | 230 | FF | MEP |  |  |  |
| T16TR26005C0 |  | PT-16 ; 2nd Fix, Wiring for Power/Lighting/Emergency (TR RM) | 30d | 2012-06-28 | 2012-08-02 | T16TR26026C0, T16TR09501C0 |  |  |  |  | 21.94d | 6d | ELECTRICAL [392.4 h]; Cost |  |  | T16TR26005C0 | PT | C |  | 16 | TR | ME | 260 | 05 | BILL 10 | B10 | S2 | 2F | R00 | ACF07 | 260 | 2n | MEP |  |  |  |
| T16TR26015C0 |  | PT-16 ; Final Fix, Inst of Ceiling rose (TR RM) | 30d | 2012-06-28 | 2012-08-02 | T16TR09501C0 |  |  |  |  | 21.94d | 6d | ELECTRICAL [61.2 h]; Cost |  |  | T16TR26015C0 | PT | C |  | 16 | TR | ME | 260 | 15 | BILL 10 | B10 | S2 | FF | R00 | ACF07 | 260 | FF | MEP |  |  |  |
| T16TR26019C0 |  | PT-16 ; Final Fix, Inst of Light fittings (TR RM) | 36d | 2012-06-28 | 2012-08-09 | T16TR09501C0 |  |  |  |  | 15.94d | 0d | ELECTRICAL [7815.6 h]; Cost |  |  | T16TR26019C0 | PT | C |  | 16 | TR | ME | 260 | 19 | BILL 10 | B10 | S2 | FF | R00 | ACF07 | 260 | FF | MEP |  |  |  |
| T16TR26076C0 |  | PT-16 ; Final Fix, Lighting fittings (TR RM) | 36d | 2012-06-28 | 2012-08-09 | T16TR09501C0 |  |  |  |  | 15.94d | 0d | ELECTRICAL [7815.6 h]; Cost | 420 | 20001170 | T16TR26076C0 | PT | C |  | 16 | TR | ME | 260 | 76 | BILL 10 | B10 | S2 | FF | R00 | ACF07 | 260 | FF | MEP |  |  |  |
| T16TR27002C0 |  | PT-16 ; 2nd Fix, Dressing of ELV panels (TR RM) | 30d | 2012-06-28 | 2012-08-02 | T16TR09205C0, T16TR27020C0 SS |  |  |  |  | 15.94d | 0d | ELECTRICAL [273.6 h]; Cost |  |  | T16TR27002C0 | PT | C |  | 16 | TR | ME | 270 | 02 | BILL 10 | B10 | S2 | 2F | R00 | ACF07 | 270 | 2n | MEP |  |  |  |
| T16TR27020C0 |  | PT-16 ; 2nd Fix, Inst of ELV Equipment (Panels) (TR RM) | 36d | 2012-06-28 | 2012-08-09 | T16TR09205C0, T16TR09501C0 |  |  |  |  | 15.94d | 0d | ELECTRICAL [1819.2 h]; Cost |  |  | T16TR27020C0 | PT | C |  | 16 | TR | ME | 270 | 20 | BILL 10 | B10 | S2 | 2F | R00 | ACF04 | 270 | 2n | MEP |  | E |  |
| T16TR27030C0 |  | PT-16 ; Final Fix, Inst of ELV device (Detector/Speaker) (TR RM) | 36d | 2012-06-28 | 2012-08-09 | T16TR27002C0 SS, T16TR09501C0 |  |  |  |  | 15.94d | 0d | ELECTRICAL [3571.2 h]; Cost |  |  | T16TR27030C0 | PT | C |  | 16 | TR | ME | 270 | 30 | BILL 10 | B10 | S2 | FF | R00 | ACF07 | 270 | FF | MEP |  |  |  |
| T16TR26013C0 |  | PT-16 ; Final Fix, Termination & Gladding of Cables (TR RM) | 18d | 2012-07-12 | 2012-08-02 | T16TR26009C0, T16TR09501C0 |  |  |  |  | 21.94d | 6d | ELECTRICAL [148.8 h]; Cost |  |  | T16TR26013C0 | PT | C |  | 16 | TR | ME | 260 | 13 | BILL 10 | B10 | S2 | FF | R00 | ACF07 | 260 | FF | MEP |  |  |  |
| T16TR01006C0 |  | PT-16 ; 2nd, Ceiling Inspection by Consultants (TR RM) | 11.88d | 2012-07-19 | 2012-08-02 | T16TR23009C0, T16TR23011C0, T16TR23013C0, T16TR26007C0, T16TR09501C0 |  |  |  |  | 22.06d | 6.12d | Labor General [1.2 h]; Cost |  |  | T16TR01006C0 | PT | C |  | 16 | TR | ME | 010 | 06 | BILL 10 | B10 | S2 | CI | R00 | ACF07 | 010 | 2n | MEP |  |  |  |
| T16TR08105C0 |  | PT-16 ; Doors (TR RM) | 18d | 2012-07-19 | 2012-08-09 | T16TR08101C0, T16TR09501C0, T16TR09601C0, T16TR09901C0 |  |  |  |  | 43.94d | 0d | ASSORTED DOORS [40 h]; ASSORTED DOORS [4 no]; Cost | 317 | 1325 | T16TR08105C0 | PT | C | 08 | 16 | TR | DO | 081 | 05 | BILL 10 | B10 | S2 | DR | R00 | ACF06 | 081 |  |  |  |  |  |
| T16TR21115C0 |  | PT-16 ; 2nd Fix, Gaseous Fire Suppression (TR RM) | 18d | 2012-07-19 | 2012-08-09 | T16TR09601C0 |  |  |  |  | 15.94d | 0d | MECHANICAL [2626.8 h]; Cost | 411 | 20001130 | T16TR21115C0 | PT | C |  | 16 | TR | ME | 211 | 15 | BILL 10 | B10 | S2 | 2F | R00 | ACF07 | 211 | 2n | MEP |  |  |  |
| T16TR08709C0 |  | PT-16 ; Ironmongery (TR RM) | 16d | 2012-08-09 | 2012-08-30 | T16TR08105C0 |  |  |  |  | 43.94d | 28d | IRONMONGERY [50 h]; IRONMONGERY [5 no]; Cost | 322 | 20001100 | T16TR08709C0 | PT | C | 08 | 16 | TR | DO | 087 | 09 | BILL 10 | B10 | S2 | IM | R00 | ACF06 | 087 |  |  |  |  |  |
| T16TR09503C0 |  | PT-16 ; Ceiling closure (TR RM) | 14d | 2012-08-09 | 2012-08-28 | T16TR01006C0, T16TR09501C0, T16TR21115C0, T16TR26005C0, T16TR26007C0, T16TR26026C0, T16TR26027C0, T16TR23074C0, T16TR23003C0, T16TR26076C0, T16TR26015C0, T16TR26013C0, T16TR26019C0, T16TR27030C0, T16TR23023C0 |  |  |  |  | 15.94d | 0d | ASSORTED CEILING FINISH [33.21 h]; CEILING GYPSUM [8.2 h]; ASSORTED CEILING FINISH [54 m2]; CEILING GYPSUM [25 m2]; Cost | 337 | 20001080 | T16TR09503C0 | PT | C |  | 16 | TR | CE | 095 | 03 | BILL 10 | B10 | S2 | 02 | R00 | ACF06 | 095 |  |  |  |  |  |
| T16TR09907C0 |  | PT-16 ; Ceiling - Final paint (TR RM) | 12d | 2012-08-28 | 2012-09-11 | T16TR09905C0, T16TR09503C0 |  |  |  |  | 33.94d | 18d | CEILING PAINT [2 h]; CEILING PAINT [1 m2]; Cost | 363 | 1314 | T16TR09907C0 | PT | C |  | 16 | TR | PA | 099 | 07 | BILL 10 | B10 | S2 | 02 | R00 | ACF06 | 099 |  |  |  |  |  |
| T16TR26017C0 |  | PT-16 ; Final Fix, Inst of Switch/Sockets (TR RM) | 12d | 2012-08-28 | 2012-09-11 | T16TR09901C0, T16TR09503C0 |  |  |  |  | 15.94d | 0d | ELECTRICAL [362.4 h]; Cost |  |  | T16TR26017C0 | PT | C |  | 16 | TR | ME | 260 | 17 | BILL 10 | B10 | S2 | FF | R00 | ACF07 | 260 | FF | MEP |  |  |  |
| T16TR01802C0 |  | PT-16 ; MEP de-snag, FIREM sign-off | 18d | 2012-09-11 | 2012-10-02 | T16TR26017C0, T16TR23074C0, T16TR23003C0, T16TR26015C0, T16TR26019C0, T16TR27030C0, T16TR26076C0, T16TR26013C0 |  |  |  |  | 15.94d | 0d | TESTING & COMMISSIONING [255 h]; Cost |  |  | S05CO01851C0 | PT | C |  | 16 | TR | SC | 018 | 53 | BILL 10 | B10 | S2 | 01 | R00 | ACF07 | 018 |  |  |  |  |  |
| T16TR01801C0 |  | PT-16 ; Touch-up & Clean / JV inspection /CIR /De-snag | 23.88d | 2012-10-02 | 2012-11-01 | T16TR01802C0, T16TR08709C0, T16TR09601C0, T16TR09903C0, T16TR09907C0, T16TR09503C0 |  |  |  |  | 15.94d | 0d | TESTING & COMMISSIONING [64 h]; Cost | 396 |  | T16TR01851C0 | PT | C |  | 16 | TR | SC | 018 | 51 | BILL 10 | B10 | S2 | 02 | R00 | ACF07 | 018 |  |  |  |  |  |
| T16TR01803C0 |  | PT-16 ; Consultant's final de-snag inspection | 12d | 2012-11-01 | 2012-11-17 | T16TR01801C0 |  |  |  |  | 15.94d | 0d | Labor General [1 h]; Cost |  |  | CP3TS01803C0 | PT | C |  | 16 | TR | SC | 018 | 03 | BILL 10 | B10 | S1 | 03 | R00 | ACF07 | 018 |  |  |  |  |  |

| ID | WBS | Activity | Duration | Start | Finish | Predecessors | Complete | Remaining | Planned start | Planned finish | Total float | Free float | Resources | Cost | Actual cost | change id | P_811 | P_711 | CCAD BUILDING(SET) | CCAD PHASE(SET) | CCAD FLOOR(SET) | CCAD ZONE(SET) | CCAD WORK(SET) | CCAD SECTION(SET) | CCAD SERIAL No.(SET) | CCAD SUB ZONE MEP(SET) | CCAD CBS(SET) | CCAD BILL(SET) | CCAD HANDOVER(SET) | CCAD TAG(SET) | CCAD REV(SET) | CCADACF (SET) | CCAD CSA | CCAD SSCF | Act Selector % | Change Order # | NEW ACTIVITY ID | R3 Partitions | CCAD DIVISION(SET) | CCAD MEQ | R3 Finish |
| --- | --- | --- | --- | --- | --- | --- | --- | --- | --- | --- | --- | --- | --- | --- | --- | --- | --- | --- | --- | --- | --- | --- | --- | --- | --- | --- | --- | --- | --- | --- | --- | --- | --- | --- | --- | --- | --- | --- | --- | --- | --- |
|  | 04 | **Public Area ( Elev.Lobby & Corridors )** |  | 2011-08-02 | 2013-01-30 |  |  |  |  |  |  |  |  |  |  |  |  |  |  |  |  |  |  |  |  |  |  |  |  |  |  |  |  |  |  |  |  |  |  |  |  |
| T16PA23001C0 |  | PT-16 ; 1st Fix, Inst. of Supports for MEP (Public Area) | 53.88d | 2011-08-02 A | 2011-12-04 | T16CO07807C0 | 10% | 48.49d | 2011-08-25 | 2011-10-29 | 15.94d | 0d | MECHANICAL [800.4 h]; Cost [45150.4 AED] | 45,150.38 | 4,515.04 | S08PA23001C0 | 10 | 0 | PT | C | 16 | PA | ME | 230 | 01 | 1S | BILL 10 | B10 | S2 | 1F | R00 | ACF04 | MEP | 230 | M1F |  |  |  |  |  |  |
| T16PA09201C0 |  | PT-16 ; Metal Studs (Public Area) | 30d | 2011-09-05 A | 2012-01-05 | T16PA23001C0 SS+12d, TAFCI09202R02 FS+79d, T16PA23001C0 | 10% | 27d | 2011-11-15 | 2011-12-22 | 43.94d | 0d | PARTITIONS [5687 h]; PARTITIONS - Metal Studs [789 m]; Cost |  |  | S08PA09201C0 |  |  | PT | C | 16 | PA | PT | 092 | 01 |  | BILL 10 | B10 | S2 | 1F | R00 | ACF06 | GP | 092 | PMS | 313 | 944 | R3 |  |  |  |
| T16PA26001C0 |  | PT-16 ; 1st Fix, Inst of Trunking/Conduiting (Public Area) | 60d | 2011-12-04 | 2012-02-14 | T16CO07807C0, T16PA23001C0 |  |  |  |  | 15.94d | 0d | ELECTRICAL [5040 h]; Cost |  |  | S08PA26001C0 |  |  | PT | C | 16 | PA | ME | 260 | 01 | 1S | BILL 10 | B10 | S2 | 1F | R00 | ACF04 | MEP | 260 | M1F |  |  |  |  |  |  |
| T16PA27010C0 |  | PT-16 ; 1st Fix, Inst of Trunking for ELV system (Public Area) | 54d | 2011-12-14 | 2012-02-18 | T16CO07807C0, T16PA23001C0, T16PA26001C0 SS+9d |  |  |  |  | 15.94d | 0d | ELECTRICAL [3202.8 h]; Cost |  |  | S08PA27010C0 |  |  | PT | C | 16 | PA | ME | 270 | 10 | 1S | BILL 10 | B10 | S2 | 1F | R00 | ACF04 | MEP | 270 | M1F |  |  |  |  |  |  |
| T16PA26013C0 |  | PT-16 ; 1st Fix, Inst of Cable Tray (Public Area) | 48d | 2011-12-26 | 2012-02-22 | T16CO07807C0, T16PA23001C0, T16PA27010C0 SS+10d |  |  |  |  | 15.94d | 0d | ELECTRICAL [399.6 h]; Cost |  |  | S08PA26013C0 |  |  | PT | C | 16 | PA | ME | 260 | 13 | 1S | BILL 10 | B10 | S2 | 1F | R00 | ACF04 | MEP | 260 | M1F |  |  |  |  |  |  |
| T16PA09203C0 |  | PT-16 ; Partitions early wall & 1st face (Public Area) | 33d | 2012-01-05 | 2012-02-14 | T16PA09201C0 |  |  |  |  | 58.94d | 43d | PARTITIONS [789 m]; PARTITIONS [4449 h]; Cost |  |  | S08PA09203C0 |  |  | PT | C | 16 | PA | PT | 092 | 03 |  | BILL 10 | B10 | S2 | 2F | R00 | ACF06 | GP | 092 | P1F | 314 | 945 |  |  |  |  |
| T16PA22011C0 |  | PT-16 ; 2nd Fix, Drainage/Water pipe (wall) (Public Area) | 42d | 2012-01-05 | 2012-02-25 | T16PA09201C0 |  |  |  |  | 43.94d | 0d | PLUMBING [1378.8 h]; Cost |  |  | S08PA22011C0 |  |  | PT | C | 16 | PA | ME | 220 | 11 | 2n | BILL 10 | B10 | S2 | 2F | R00 | ACF07 | MEP | 220 |  |  |  |  |  |  |  |
| T16PA26009C0 |  | PT-16 ; 2nd Fix, Inst of Wall conduites (Public Area) | 42d | 2012-01-05 | 2012-02-25 | T16PA09201C0 |  |  |  |  | 43.94d | 0d | ELECTRICAL [734.4 h]; Cost |  |  | S08PA26009C0 |  |  | PT | C | 16 | PA | ME | 260 | 09 | 2n | BILL 10 | B10 | S2 | 2F | R00 | ACF07 | MEP | 260 |  |  |  |  |  |  |  |
| T16PA22019C0 |  | PT-16 ; 1st Fix, Inst of Drainage pipe (ceiling) (Public Area) | 54d | 2012-01-12 | 2012-03-17 | T16PA23001C0, T16PA26013C0 SS+14d |  |  |  |  | 15.94d | 0d | PLUMBING [2326.8 h]; Cost |  |  | S08PA22019C0 |  |  | PT | C | 16 | PA | ME | 220 | 19 | 1S | BILL 10 | B10 | S2 | 1F | R00 | ACF04 | MEP | 220 | M1F |  |  |  |  |  |  |
| T16PA22005C0 |  | PT-16 ; 1st Fix, Inst of Water supply pipe (ceiling) (Public Area) | 60d | 2012-01-24 | 2012-04-04 | T16PA22019C0 SS+10d, T16PA23001C0 |  |  |  |  | 15.94d | 0d | PLUMBING [4548 h]; Cost |  |  | S08PA22005C0 |  |  | PT | C | 16 | PA | ME | 220 | 05 | 1S | BILL 10 | B10 | S2 | 1F | R00 | ACF04 | MEP | 220 | M1F |  |  |  |  |  |  |
| T16PA08103C0 |  | PT-16 ; Door Frames (Public Area) | 36d | 2012-02-02 | 2012-03-15 | T16PA09201C0, GNHE08101C0 FS+126d, T15PA08103C0 SS+3d |  |  |  |  | 68.12d | 5.6d | ASSORTED DOORS [448 h]; Cost |  |  | S08PA08103C0 |  |  | PT | C | 16 | PA | DO | 081 | 03 |  | BILL 10 | B10 | S2 | DF | R00 | ACF06 |  | 081 |  | 316 | 947 |  | 08 |  |  |
| T16PA21111C0 |  | PT-16 ; 1st Fix, Inst of Sprinkler main pipe (Public Area) | 48d | 2012-02-08 | 2012-04-04 | T16PA22005C0 SS+12d, T16PA23001C0 |  |  |  |  | 27.94d | 0d | MECHANICAL [1236 h]; Cost |  |  | S08PA21111C0 |  |  | PT | C | 16 | PA | ME | 211 | 11 | 1S | BILL 10 | B10 | S2 | 1F | R00 | ACF04 | MEP | 211 | M1F |  |  |  |  |  |  |
| T16PA27001C0 |  | PT-16 ; 1st Fix, Wiring/ Cabling work (Public Area) | 48d | 2012-02-22 | 2012-04-18 | T16PA26001C0, T16PA26013C0, T16PA27010C0 |  |  |  |  | 117.94d | 90d | ELECTRICAL [392.4 h]; Cost |  |  | S08PA27001C0 |  |  | PT | C | 16 | PA | ME | 270 | 01 | 1S | BILL 10 | B10 | S2 | 1F | R00 | ACF04 | MEP | 270 | M1F |  |  |  |  |  |  |
| T16PA01005C0 |  | PT-16 ; 2nd, Wall Inspection by Consultant (Public Area) | 6d | 2012-02-25 | 2012-03-03 | T16PA22011C0, T16PA26009C0 |  |  |  |  | 43.94d | 28d | Labor General [0.6 h]; Cost |  |  | S08PA01005C0 |  |  | PT | C | 16 | PA | ME | 010 | 05 | 2n | BILL 10 | B10 | S2 | WI | R00 | ACF07 | MEP | 010 |  |  |  |  |  |  |  |
| T16PA23017C0 |  | PT-16 ; 1st Fix, Inst of CHW pipe (Public Area) | 54d | 2012-02-25 | 2012-04-28 | T16PA21111C0 SS+14d, T16PA23001C0 |  |  |  |  | 27.94d | 0d | MECHANICAL [2467.2 h]; Cost |  |  | S08PA23017C0 |  |  | PT | C | 16 | PA | ME | 230 | 17 | 1S | BILL 10 | B10 | S2 | 1F | R00 | ACF04 | MEP | 230 | M1F |  |  |  |  |  |  |
| T16PA23023C0 |  | PT-16 ; 1st Fix, Inst of Main Ducting (Public Area) | 60d | 2012-03-07 | 2012-05-16 | T16PA23001C0, T16PA23017C0 SS+10d |  |  |  |  | 27.94d | 0d | MECHANICAL [8022 h]; Cost |  |  | S08PA23023C0 |  |  | PT | C | 16 | PA | ME | 230 | 23 | 1S | BILL 10 | B10 | S2 | 1F | R00 | ACF04 | MEP | 230 | M1F |  |  |  |  |  |  |
| T16PA09205C0 |  | PT-16 ; Partitions Closing (Public Area) | 36d | 2012-04-04 | 2012-05-16 | T16PA01005C0, T16PA09203C0, T16PA22005C0, T16PA22019C0, TAFOA09214C1 FF, TAFCI22011R02 FS+79d, T16PA08103C0 FF |  |  |  |  | 15.94d | 0d | PARTITIONS [789 m]; PARTITIONS [5697 h]; Cost |  |  | S08PA09205C0 |  |  | PT | C | 16 | PA | PT | 092 | 05 |  | BILL 10 | B10 | S2 | FF | R00 | ACF06 | GP | 092 | P2F | 315 | 946 | R3 |  |  |  |
| T16PA21117C0 |  | PT-16 ; 1st Fix, Inst of Sprinkler branch pipe (Public Area) | 48d | 2012-04-04 | 2012-05-30 | T16PA09201C0, T16PA21111C0 |  |  |  |  | 81.94d | 54d | MECHANICAL [561.6 h]; Cost |  |  | S08PA21117C0 |  |  | PT | C | 16 | PA | ME | 211 | 17 | 1S | BILL 10 | B10 | S2 | 1F | R00 | ACF04 | MEP | 211 | M1F |  |  |  |  |  |  |
| T16PA23009C0 |  | PT-16 ; 2nd Fix, Inst of VAV'S CHW connection (Public Area) | 42d | 2012-04-28 | 2012-06-17 | T16PA23017C0 |  |  |  |  | 37.94d | 10d | MECHANICAL [1450.8 h]; Cost |  |  | S08PA23009C0 |  |  | PT | C | 16 | PA | ME | 230 | 09 | 2n | BILL 10 | B10 | S2 | 2F | R00 | ACF07 | MEP | 230 |  |  |  |  |  |  |  |
| T16PA09901C0 |  | PT-16 ; Wall Prime & 1st coat (Public Area) | 30d | 2012-05-16 | 2012-06-21 | T16PA09205C0 |  |  |  |  | 63.94d | 0d | WALL PAINT [866 h]; WALL PAINT [1080 m2]; Cost |  |  | S08PA09901C0 |  |  | PT | C | 16 | PA | PA | 099 | 01 |  | BILL 10 | B10 | S2 | 01 | R00 | ACF06 |  | 099 |  | 328 | 956 |  |  |  |  |
| T16PA23008C0 |  | PT-16 ; 1st Fix, Inst of VCD's/FD's (Public Area) | 48d | 2012-05-16 | 2012-07-12 | T16PA23023C0 |  |  |  |  | 45.94d | 18d | MECHANICAL [1753.2 h]; Cost |  |  | S08PA23008C0 |  |  | PT | C | 16 | PA | ME | 230 | 08 | 1S | BILL 10 | B10 | S2 | 1F | R00 | ACF04 | MEP | 230 | M1F |  |  |  |  |  |  |
| T16PA23015C0 |  | PT-16 ; 2nd Fix, Insulation of CHW pipe & Duct (Public Area) | 66d | 2012-05-16 | 2012-08-02 | T16PA23009C0 SS+6d, T16PA23017C0, T16PA23023C0 |  |  |  |  | 27.94d | 0d | MECHANICAL [6067.2 h]; Cost |  |  | S08PA23015C0 |  |  | PT | C | 16 | PA | ME | 230 | 15 | 2n | BILL 10 | B10 | S2 | 2F | R00 | ACF07 | MEP | 230 |  |  |  |  |  |  |  |
| T16PA26005C0 |  | PT-16 ; 2nd Fix, Wiring for Power/Lighting/Emergency (Public Area) | 42d | 2012-05-16 | 2012-07-05 | T16PA09205C0 |  |  |  |  | 90.94d | 0d | ELECTRICAL [392.4 h]; Cost |  |  | S08PA26005C0 |  |  | PT | C | 16 | PA | ME | 260 | 05 | 2n | BILL 10 | B10 | S2 | 2F | R00 | ACF07 | MEP | 260 |  |  |  |  |  |  |  |
| T16PA26007C0 |  | PT-16 ; 2nd Fix, Cable Pulling (Public Area) | 48d | 2012-05-16 | 2012-07-12 | T16PA09205C0 |  |  |  |  | 126.81d | 98.88d | ELECTRICAL [2683.2 h]; Cost |  |  | S08PA26007C0 |  |  | PT | C | 16 | PA | ME | 260 | 07 | 2n | BILL 10 | B10 | S2 | 2F | R00 | ACF07 | MEP | 260 |  |  |  |  |  |  |  |
| T16PA26011C0 |  | PT-16 ; 2nd Fix, Inst of Equipment (DB) (Public Area) | 54d | 2012-05-16 | 2012-07-19 | T16PA09205C0 |  |  |  |  | 107.81d | 33d | ELECTRICAL [878.4 h]; Cost |  |  | S08PA26011C0 |  |  | PT | C | 16 | PA | ME | 260 | 11 | 2n | BILL 10 | B10 | S2 | 2F | R00 | ACF04 | MEP | 260 |  |  |  |  |  | E |  |
| T16PA26053C0 |  | PT-16 ; 2nd Fix, Wiring / Cabling (Public Area) | 42d | 2012-05-16 | 2012-07-05 | T16PA09203C0, T16PA09205C0 |  |  |  |  | 72.94d | 45d | ELECTRICAL [392.4 h]; Cost |  |  | S08PA26053C0 |  |  | PT | C | 16 | PA | ME | 260 | 53 | 2n | BILL 10 | B10 | S2 | 2F | R00 | ACF07 | MEP | 260 |  | 389 | 977 |  |  |  |  |
| T16PA27020C0 |  | PT-16 ; 2nd Fix, Inst of ELV Equipment (Panels) (Public Area) | 66d | 2012-05-16 | 2012-08-02 | T16PA09205C0 |  |  |  |  | 27.94d | 0d | ELECTRICAL [1819.2 h]; Cost |  |  | S08PA27020C0 |  |  | PT | C | 16 | PA | ME | 270 | 20 | 2n | BILL 10 | B10 | S2 | 2F | R00 | ACF04 | MEP | 270 |  |  |  |  |  | E |  |
| T16PA05501C0 |  | PT-16 ; Handrails & balustrade (Public Area) | 36d | 2012-06-21 | 2012-08-02 | T16PA09901C0, TAFT105509C0, TAFT805509C0 |  |  |  |  | 65.81d | 21d | SECONDARY STEEL [356 h]; Cost |  |  | S08PA05501C0 |  |  | PT | C | 16 | PA | SW | 055 | 01 |  | BILL 10 | B10 | S2 | 01 | R00 | ACF03 |  | a |  |  |  |  |  |  |  |
| T16PA26015C0 |  | PT-16 ; Final Fix, Termination & Gladding of Cables (Public Area) | 36d | 2012-07-05 | 2012-08-16 | T16PA26005C0 |  |  |  |  | 90.94d | 63d | ELECTRICAL [148.8 h]; Cost |  |  | S08PA26015C0 |  |  | PT | C | 16 | PA | ME | 260 | 15 | FF | BILL 10 | B10 | S2 | FF | R00 | ACF07 | MEP | 260 |  |  |  |  |  |  |  |
| T16PA09501C0 |  | PT-16 ; Ceiling Grid and Service Tile (Public Area) | 21d | 2012-08-02 | 2012-08-29 | T16PA09205C0 SS+15d, T16PA21117C0, T16PA23008C0, T16PA23009C0, T16PA23015C0, T16PA27001C0, TAFCI22022R02 FS+79d, T16PA26053C0 FF, T16PA27020C0, T16PA09901C0 |  |  |  |  | 27.94d | 0d | CEILING GRID FOR GYPSUM [7543.63 h]; CEILING GRID FOR GYPSUM [645.55 m2]; Cost |  |  | S08PA09501C0 |  |  | PT | C | 16 | PA | CE | 095 | 01 |  | BILL 10 | B10 | S2 | 01 | R00 | ACF06 |  | 095 |  | 323 | 952 |  |  |  | R3 |
| T16PA09601C0 |  | PT-16 ; Flooring (Rubber & etc) (Public Area) | 30d | 2012-08-29 | 2012-10-03 | TAFCI22022R02 FS+79d, T16PA09501C0, T16PA05501C0 |  |  |  |  | 44.81d | 0d | RUBBER FLOOR [48 h]; RUBBER FLOOR [120 m2]; Cost |  |  | S08PA09601C0 |  |  | PT | C | 16 | PA | FF | 096 | 01 |  | BILL 10 | B10 | S2 | 03 | R00 | ACF06 |  | RF |  | 326 | 955 |  |  |  | R3 |
| T16PA09602C0 |  | PT-16 ; Flooring (Stone) (Public Area) | 30d | 2012-08-29 | 2012-10-03 | TAFCI22022R02 FS+79d, T16PA09501C0 |  |  |  |  | 44.81d | 0d | STONE FLOOR [27 m2]; STONE FLOOR [24 h]; Cost |  |  | S08PA09601C0 |  |  | PT | C | 16 | PA | FF | 096 | 01 |  | BILL 10 | B10 | S2 | 09 | R00 | ACF06 |  | ST |  | 326 | 955 |  |  |  | R3 |
| T16PA09702C0 |  | PT-16 ; Ceramic Wall Tiles (Public Area) | 6d | 2012-08-29 | 2012-09-05 | T16PA26011C0, T16PA27020C0, TVT0114211C0, TVT0214211C0, TVT0714211C0, TVT3114211C0, TVT3214255C0, TVT3314245C0, T16PA09501C0 |  |  |  |  | 122.81d | 94.88d | ASSORTED WALL FINISH [1049 h]; ASSORTED WALL FINISH [201 m2]; Cost |  |  | S08PA09701C0 |  |  | PT | C | 16 | PA | WF | 097 | 01 |  | BILL 10 | B10 | S2 | 04 | R00 | ACF06 |  | 097 |  | 105 | 1002 |  |  |  |  |
| T16PA09905C0 |  | PT-16 ; Ceiling Prime & 1st coat (Public Area) | 30d | 2012-08-29 | 2012-10-03 | T16PA09501C0 |  |  |  |  | 68.81d | 0d | CEILING PAINT [55 h]; CEILING PAINT [67 m2]; Cost |  |  | S08PA09905C0 |  |  | PT | C | 16 | PA | PA | 099 | 05 |  | BILL 10 | B10 | S2 | 01 | R00 | ACF06 |  | 099 |  | 330 | 958 |  |  |  |  |
| T16PA21115C0 |  | PT-16 ; 2nd Fix, Inst of Sprinkler droppers (Public Area) | 42d | 2012-08-29 | 2012-10-17 | T16PA09501C0 |  |  |  |  | 39.94d | 0d | MECHANICAL [1602 h]; Cost |  |  | S08PA21115C0 |  |  | PT | C | 16 | PA | ME | 211 | 15 | 2n | BILL 10 | B10 | S2 | 2F | R00 | ACF07 | MEP | 211 |  |  |  |  |  |  |  |
| T16PA23021C0 |  | PT-16 ; 2nd Fix, Inst of Flexible Duct & Plenum boxes (Public Area) | 42d | 2012-08-29 | 2012-10-17 | T16PA09205C0, T16PA09501C0 |  |  |  |  | 39.94d | 0d | MECHANICAL [30 h]; Cost |  |  | S08PA23021C0 |  |  | PT | C | 16 | PA | ME | 230 | 21 | 2n | BILL 10 | B10 | S2 | 2F | R00 | ACF07 | MEP | 230 |  |  |  |  |  |  |  |
| T16PA26017C0 |  | PT-16 ; Final Fix, Inst of Ceiling rose (Public Area) | 36d | 2012-08-29 | 2012-10-10 | T16PA09501C0 |  |  |  |  | 27.94d | 0d | ELECTRICAL [61.2 h]; Cost |  |  | S08PA26017C0 |  |  | PT | C | 16 | PA | ME | 260 | 17 | FF | BILL 10 | B10 | S2 | FF | R00 | ACF07 | MEP | 260 |  |  |  |  |  |  |  |
| T16PA27002C0 |  | PT-16 ; 2nd Fix, Wiring Droppers (Public Area) | 42d | 2012-08-29 | 2012-10-17 | T16PA09501C0 |  |  |  |  | 33.94d | 0d | ELECTRICAL [392.4 h]; Cost |  |  | S08PA27002C0 |  |  | PT | C | 16 | PA | ME | 270 | 02 | 2n | BILL 10 | B10 | S2 | 2F | R00 | ACF07 | MEP | 270 |  |  |  |  |  |  |  |
| T16PA21113C0 |  | PT-16 ; Final Fix, Inst of Sprinklers head/ Extinguisher (Public Area) | 36d | 2012-09-05 | 2012-10-17 | T16PA09501C0, T16PA21115C0 SS+6d |  |  |  |  | 39.94d | 12d | MECHANICAL [234 h]; Cost |  |  | S08PA21113C0 |  |  | PT | C | 16 | PA | ME | 211 | 13 | FF | BILL 10 | B10 | S2 | FF | R00 | ACF07 | MEP | 211 |  |  |  |  |  |  |  |
| T16PA23019C0 |  | PT-16 ; Final Fix, Inst of Grilles & Diffusers (Public Area) | 36d | 2012-09-05 | 2012-10-17 | T16PA09501C0, T16PA23021C0 SS+6d |  |  |  |  | 39.94d | 12d | MECHANICAL [1498.8 h]; Cost |  |  | S08PA23019C0 |  |  | PT | C | 16 | PA | ME | 230 | 19 | FF | BILL 10 | B10 | S2 | FF | R00 | ACF07 | MEP | 230 |  |  |  |  |  |  |  |
| T16PA26003C0 |  | PT-16 ; Final Fix, Inst of Light fittings (Public Area) | 48d | 2012-09-05 | 2012-11-03 | T16PA09501C0, T16PA26017C0 SS+6d |  |  |  |  | 27.94d | 0d | ELECTRICAL [7815.6 h]; Cost |  |  | S08PA26003C0 |  |  | PT | C | 16 | PA | ME | 260 | 03 | FF | BILL 10 | B10 | S2 | FF | R00 | ACF07 | MEP | 260 |  |  |  |  |  |  |  |
| T16PA27030C0 |  | PT-16 ; Final Fix, Inst of ELV devise (Detector/Speaker) (Public Area) | 42d | 2012-09-05 | 2012-10-24 | T16PA09501C0, T16PA27002C0 SS+6d |  |  |  |  | 33.94d | 6d | ELECTRICAL [3571.2 h]; Cost |  |  | S08PA27030C0 |  |  | PT | C | 16 | PA | ME | 270 | 30 | FF | BILL 10 | B10 | S2 | FF | R00 | ACF07 | MEP | 270 |  |  |  |  |  |  |  |
| T16PA08107C0 |  | PT-16 ; Doors (Public Area) | 36d | 2012-10-03 | 2012-11-18 | T16PA08103C0, T16PA09501C0, T16PA09601C0, T16PA09901C0, T16PA09602C0 |  |  |  |  | 44.81d | 0d | ASSORTED DOORS [900 h]; ASSORTED DOORS [90 no]; Cost |  |  | S08PA08107C0 |  |  | PT | C | 16 | PA | DO | 081 | 07 |  | BILL 10 | B10 | S2 | DR | R00 | ACF06 |  | 081 |  | 317 | 948 |  | 08 |  |  |
| T16PA09701C0 |  | PT-16 ; Wall finishes (ST, WD, WC) (Public Area) | 36d | 2012-10-03 | 2012-11-18 | T16PA26011C0, T16PA27020C0, TVT0114211C0, TVT0214211C0, TVT0714211C0, TVT3114211C0, TVT3214255C0, TVT3314245C0, TAFCI22022R02 FS+176d, T16PA09501C0, T16PA09601C0, T16PA09602C0 |  |  |  |  | 44.81d | 0d | ASSORTED WALL FINISH [764 h]; ASSORTED WALL FINISH [878 m2]; Cost |  |  | S08PA09701C0 |  |  | PT | C | 16 | PA | WF | 097 | 01 |  | BILL 10 | B10 | S2 | 01 | R00 | ACF06 |  | 097 |  | 105 | 1002 |  |  |  |  |
| T16PA09903C0 |  | PT-16 ; Wall Final Paint (Public Area) | 30d | 2012-10-03 | 2012-11-10 | T16PA09901C0, T16PA09905C0, T16PA09501C0 |  |  |  |  | 68.81d | 36d | WALL PAINT [467 h]; WALL PAINT [581 m2]; Cost |  |  | S08PA09903C0 |  |  | PT | C | 16 | PA | PA | 099 | 03 |  | BILL 10 | B10 | S2 | 02 | R00 | ACF06 |  | 099 |  | 329 | 957 |  |  |  |  |
| T16PA01006C0 |  | PT-16 ; 2nd, Ceiling Inspection by Consultants (Public Area) | 5.88d | 2012-11-03 | 2012-11-10 | T16PA21115C0, T16PA23009C0, T16PA23015C0, T16PA27002C0, T16PA09501C0, T16PA21113C0, T16PA23019C0, T16PA26015C0, T16PA26017C0, T16PA26003C0, T16PA27030C0 |  |  |  |  | 27.94d | 0d | Labor General [0.6 h]; Cost |  |  | S08PA01006C0 |  |  | PT | C | 16 | PA | ME | 010 | 06 | 2n | BILL 10 | B10 | S2 | CI | R00 | ACF07 | MEP | 010 |  |  |  |  |  |  |  |
| T16PA09503C0 |  | PT-16 ; Ceiling closure - ACT/Gypsum (Public Area) | 18d | 2012-11-10 | 2012-12-02 | T16PA01006C0, T16PA21115C0, T16PA26005C0, T16PA27001C0, T16PA27002C0, TAFOA09513C1 FF, T16PA23021C0, T16PA26007C0 |  |  |  |  | 27.94d | 0d | ASSORTED CEILING FINISH [851.77 h]; CEILING GYPSUM [211.76 h]; ASSORTED CEILING FINISH [1385 m2]; CEILING GYPSUM [646 m2]; Cost |  |  | S08PA09503C0 |  |  | PT | C | 16 | PA | CE | 095 | 03 |  | BILL 10 | B10 | S2 | 02 | R00 | ACF06 |  | 095 |  | 324 | 953 |  |  |  | R3 |
| T16PA08709C0 |  | PT-16 ; Ironmongery (Public Area) | 18d | 2012-11-18 | 2012-12-10 | T16PA08107C0 |  |  |  |  | 44.81d | 16.88d | IRONMONGERY [1280 h]; IRONMONGERY [128 no]; Cost |  |  | S08PA08709C0 |  |  | PT | C | 16 | PA | DO | 087 | 09 |  | BILL 10 | B10 | S2 | IM | R00 | ACF06 |  | 087 |  | 322 | 951 |  | 08 |  |  |
| T16PA11001C0 |  | PT-16 ; Wall Protection (WP, CG, WG, FCG) (Public Area) | 18d | 2012-11-18 | 2012-12-10 | T16PA09701C0, T16PA09903C0 SS |  |  |  |  | 44.81d | 16.88d | FF&E [42 h]; Cost |  |  | S08PA11001C0 |  |  | PT | C | 16 | PA | WF | 110 | 01 |  | BILL 10 | B10 | S2 | 03 | R00 | ACF08 |  | b |  | 326 | 1001 |  |  |  |  |
| T16PA11009C0 |  | PT-16 ; Signage (Public Area) | 14.75d | 2012-11-18 | 2012-12-05 | T16PA09701C0 |  |  |  |  | 48.06d | 20.12d | SIGNAGES [173 h]; SIGNAGES [172.58 no]; Cost |  |  | S08PA11009C0 |  |  | PT | C | 16 | PA | SA | 110 | 09 |  | BILL 10 | B10 | S2 | 09 | R00 | ACF08 |  | c |  | 322 | 951 |  | 08 |  |  |
| T16PA09907C0 |  | PT-16 ; Ceiling Final paint (Public Area) | 12d | 2012-12-02 | 2012-12-17 | T16PA09601C0, T16PA09905C0, T16PA09602C0, T16PA09503C0 |  |  |  |  | 38.94d | 11d | CEILING PAINT [29 h]; CEILING PAINT [36 m2]; Cost |  |  | S08PA09907C0 |  |  | PT | C | 16 | PA | PA | 099 | 07 |  | BILL 10 | B10 | S2 | 02 | R00 | ACF06 |  | 099 |  | 331 | 959 |  |  |  |  |
| T16PA26019C0 |  | PT-16 ; Final Fix, Inst of Switch/Sockets (Public Area) | 12d | 2012-12-02 | 2012-12-17 | T16PA09901C0, T16PA09503C0 |  |  |  |  | 27.94d | 0d | ELECTRICAL [362.4 h]; Cost |  |  | S08PA26019C0 |  |  | PT | C | 16 | PA | ME | 260 | 19 | FF | BILL 10 | B10 | S2 | FF | R00 | ACF07 | MEP | 260 |  |  |  |  |  |  |  |

| ID | WBS | Activity | Duration | Start | Finish | Predecessors | Complete | Remaining | Planned start | Planned finish | Total float | Free float | Resources | Cost | Actual cost | change id | CCAD BUILDING(SET) | CCAD PHASE(SET) | CCAD FLOOR(SET) | CCAD ZONE(SET) | CCAD WORK(SET) | CCAD SECTION(SET) | CCAD SERIAL No.(SET) | CCAD CBS(SET) | CCAD BILL(SET) | CCAD HANDOVER(SET) | CCAD TAG(SET) | CCAD REV(SET) | CCADACF (SET) | CCAD SSCF | RENZ % COMPLETE | Phase | Area/ Department | Grids | Are | Weight & Nos | Process | Levels | Claimed This Month | CCAD CSA | P_811 | P_711 | U% | CCAD SUB ZONE MEP(SET) | Act Selector % | Change Order # | NEW ACTIVITY ID | CCAD DIVISION(SET) | CCAD MEQ |
| --- | --- | --- | --- | --- | --- | --- | --- | --- | --- | --- | --- | --- | --- | --- | --- | --- | --- | --- | --- | --- | --- | --- | --- | --- | --- | --- | --- | --- | --- | --- | --- | --- | --- | --- | --- | --- | --- | --- | --- | --- | --- | --- | --- | --- | --- | --- | --- | --- | --- |
|  | 10 | **Precommissioning Tesing & snagging (Public Area)** |  | 2012-12-17 | 2013-01-30 |  |  |  |  |  |  |  |  |  |  |  |  |  |  |  |  |  |  |  |  |  |  |  |  |  |  |  |  |  |  |  |  |  |  |  |  |  |  |  |  |  |  |  |  |
| T16TS01805C0 |  | PT-16 ; MEP de-snag, FIREM sign-off | 11d | 2012-12-17 | 2012-12-30 | T16PA26015C0, T16PA21113C0, T16PA23019C0, T16PA26017C0, T16PA26003C0, T16PA27030C0, T16PA26019C0 |  |  |  |  | 27.94d | 0d | TESTING & COMMISSIONING [510 h]; Cost |  |  | T16TS01801C0 | PT | C | 16 | TS | SC | 018 | 01 | BILL 10 | B10 | S2 | 01 | R00 | ACF07 | 018 |  |  |  |  |  |  |  |  |  |  |  |  |  |  |  |  |  |  |  |
| T16TS01810C0 |  | PT-16 ; Touch-up & Clean / JV inspection /CIR /De-snag | 18d | 2012-12-30 | 2013-01-21 | T16PA05501C0, T16PA08709C0, T16PA09601C0, T16PA09701C0, T16PA09903C0, T16PA09907C0, T16PA11001C0, T16PA11009C0, T16TS01805C0, T16PA09602C0, T16PA09702C0, T16PA09503C0 |  |  |  |  | 27.94d | 0d | TESTING & COMMISSIONING [128 h]; Cost |  |  | T16TS01802C0 | PT | C | 16 | TS | SC | 018 | 02 | BILL 10 | B10 | S2 | 02 | R00 | ACF07 | 018 |  |  |  |  |  |  |  |  |  |  |  |  |  |  |  |  |  |  |  |
| T16TS01815C0 |  | PT-16 ; Consultant's final de-snag inspection | 7d | 2013-01-21 | 2013-01-30 | T16TS01810C0 |  |  |  |  | 27.94d | 18.94d | Labor General [1 h]; Cost |  |  | T16TS01803C0 | PT | C | 16 | TS | SC | 018 | 03 | BILL 10 | B10 | S2 | 03 | R00 | ACF07 | 018 |  |  |  |  |  |  |  |  |  |  |  |  |  |  |  |  |  |  |  |
|  | 17 | **Level 17** |  | 2011-03-12 | 2013-04-02 |  |  |  |  |  |  |  |  |  |  |  |  |  |  |  |  |  |  |  |  |  |  |  |  |  |  |  |  |  |  |  |  |  |  |  |  |  |  |  |  |  |  |  |  |
|  | 01 | **Structure & Envelopment** |  | 2011-03-12 | 2012-05-20 |  |  |  |  |  |  |  |  |  |  |  |  |  |  |  |  |  |  |  |  |  |  |  |  |  |  |  |  |  |  |  |  |  |  |  |  |  |  |  |  |  |  |  |  |
| T17SA03301C0 |  | PT-17 ; Corewall Concrete (Zone SA) | 4d | 2011-03-12 A | 2011-03-23 A | T16SA03301C0 | 100% |  | 2011-03-05 | 2011-03-09 |  |  | CONCRETE [6280 h]; CONCRETE [158 m3]; Cost |  |  | T17SA03301C0 | PT | C | 17 | SA | CT | 033 | 01 | BILL 10 | B10 | S2 | 04 | R00 | ACF03 | 033 | 100 | Z2 | PA | TRUS | D | A10 | EREC | 10FLR |  |  |  |  |  |  |  |  |  |  |  |
| T17SB03303C0 |  | PT-17 ; Corewall Concrete (Zone SB) | 4d | 2011-03-25 A | 2011-03-28 A | T16SB03303C0 | 100% |  | 2011-03-20 | 2011-03-23 |  |  | CONCRETE [6280 h]; CONCRETE [158 m3]; Cost |  |  | T17SB03303C0 | PT | C | 17 | SB | CT | 033 | 03 | BILL 10 | B10 | S2 | 04 | R00 | ACF03 | 033 | 100 | Z2 | PA | TRUS | D | A10 | EREC | 10FLR |  |  |  |  |  |  |  |  |  |  |  |
| T17CO05103C0 |  | PT-17 ; Alignment & welding of 17th Floor (Common Zone) | 3d | 2011-06-01 A | 2011-07-19 A | T17CO05101C0 | 100% |  | 2011-06-30 | 2011-07-04 |  |  | STRUCTURAL STEEL [1152 h]; Cost |  |  | T17CO05103C0 | PT | C | 17 | CO | ST | 051 | 03 | BILL 10 | B10 | S2 | 02 | R00 | ACF03 | 051 |  | Z2 | PA | 10TH | E | A12A | EREC | 11FLR | 231883.58 | ST |  |  |  |  |  |  |  |  |  |
| T17CO05101C0 |  | PT-17 ; Erection of Structural Steel of 17 th Floor (Common Zone) | 4d | 2011-06-23 A | 2011-06-30 A | T16CO05103C0, T17SA03301C0, T17SB03303C0 | 100% |  | 2011-06-23 | 2011-06-29 |  |  | STRUCTURAL STEEL [15016 h]; STRUCTURAL STEEL [491 T(Fe)]; Cost |  |  | T17CO05101C0 | PT | C | 17 | CO | ST | 051 | 01 | BILL 10 | B10 | S2 | 01 | R00 | ACF03 | 051 |  | Z2 | PA | 10TH | E | A12A | EREC | 11FLR | 4173904.3 | ST |  |  |  |  |  |  |  |  |  |
| T17CO05305C0 |  | PT-17 ; Metal Decking 17 FLR (Common Zone) | 12d | 2011-07-10 A | 2011-08-30 A | T17CO05103C0, T18CO05101C0 | 100% |  | 2011-07-02 | 2011-07-16 |  |  | METAL DECKING [2760 h]; METAL DECKING [3493 m2]; Cost |  |  | T17CO05305C0 | PT | C | 17 | CO | ST | 053 | 05 | BILL 10 | B10 | S2 | 03 | R00 | ACF03 | 053 |  | Z2 | PA | 10TH | E | A12A | MDEC | 11FLR |  | ST |  |  |  |  |  |  |  |  |  |
| T17CO03399C0 |  | PT-17 ; Concrete on Metal Decking 17 FLR (Common Zone) | 10d | 2011-08-10 A | 2011-10-01 | T17CO05305C0 | 95% | 0.5d | 2011-07-31 | 2011-08-10 | 15.94d | 0d | CONCRETE [23776 h]; CONCRETE [598 m3]; Cost |  |  | T17CO05335C0 | PT | C | 17 | CO | CT | 033 | 99 | BILL 10 | B10 | S2 | 08 | R00 | ACF03 | 033 |  | Z2 | PA | 10TH | E | A12A | MDEC | 11FLR |  |  | 90 | 0 | 95 |  |  |  |  |  |  |
| T17CO07807C0 |  | PT-17 ; Cementitious Fire proofing Lvl 17 (Common Zone) | 12d | 2011-09-07 A | 2011-10-03 | T18CO03399C0 | 90% | 1.2d | 2011-09-07 | 2011-09-20 | 22.3d | 0d | CEMENTITIOUS FIREPROOFING [3066 h]; CEMENTITIOUS FIREPROOFING [6132 m2]; Cost |  |  | T17CO07807C0 | PT | C | 17 | CO | ST | 078 | 07 | BILL 10 | B10 | S2 | 04 | R00 | ACF03 | 078 |  | Z2 | PA | 10TH | E | A12A | FIRE | 11FLR |  | ST |  |  | 90 |  |  |  |  |  |  |
| T17CO04403C0 |  | PT-17 ; C2 Bracket (Common Zone) | 30d | 2011-12-21 | 2012-01-26 | T17CO07807C0, T17CO05103C0, T15CO04403C0, T18CO04403C0 SS |  |  |  |  | 19.65d | 0d | FACADE CURTAIN WALL 2 [522.3 h]; Cost |  |  | T17CO04403C0 | PT | C | 17 | CO | FA | 044 | 03 | BILL 10 | B10 | S2 | FC2 | R00 | ACF05 | 044 |  |  |  |  |  |  |  |  |  | FA |  |  |  |  |  |  |  |  |  |
| T17CO04405C0 |  | PT-17 ; C2 Transom & Mullion (Common Zone) | 30d | 2012-01-08 | 2012-02-13 | T17CO04403C0 SS+14d |  |  |  |  | 19.65d | 0d | FACADE CURTAIN WALL 2 [2088.7 h]; Cost |  |  | T17CO04405C0 | PT | C | 17 | CO | FA | 044 | 05 | BILL 10 | B10 | S2 | FC2 | R00 | ACF05 | 044 |  |  |  |  |  |  |  |  |  | FA |  |  |  |  |  |  |  |  |  |
| T17CO04407C0 |  | PT-17 ; C2 Glazing (Common Zone) | 30d | 2012-01-08 | 2012-02-13 | T17CO04405C0 SS, T17CO04405C0 FF |  |  |  |  | 19.65d | 0d | FACADE CURTAIN WALL 2 [4766.9 h]; FACADE CURTAIN WALL 2 [1742 m2]; FACADE TOTAL QUANTITY m2 [1742 m2]; Cost |  |  | T17CO04407C0 | PT | C | 17 | CO | FA | 044 | 07 | BILL 10 | B10 | S2 | FC2 | R00 | ACF05 | 044 |  |  |  |  |  |  |  |  |  | FA |  |  |  |  |  |  |  |  |  |
| T17CO04415C0 |  | PT-17 ; SG Catwalk Installation (Common Zone) | 52d | 2012-03-20 | 2012-05-20 | TEXCO04407C0 SS+14d, T16CO04415C0 SS |  |  |  |  | 34.02d | 0d | Labor General [4687.6 h]; Cost |  |  | I05CO04411C0 | PT | C | 17 | CO | FA | 044 | 11 | BILL 10 | B10 | S2 | SG | R00 | ACF05 | 044 |  |  |  |  |  |  |  |  |  | FA |  |  |  |  |  |  |  |  |  |
|  | 02 | **PAT RM-1** |  | 2011-09-05 | 2013-04-02 |  |  |  |  |  |  |  |  |  |  |  |  |  |  |  |  |  |  |  |  |  |  |  |  |  |  |  |  |  |  |  |  |  |  |  |  |  |  |  |  |  |  |  |  |
| T17P122011C0 |  | PT-17 ; 2nd Fix, Drainage/Water pipe (wall) (PAT RM-1) | 42d | 2011-09-05 A | 2012-03-31 | T17P109201C0 | 5% | 39.9d | 2012-01-21 | 2012-03-11 | 28d | 2.1d | PLUMBING [1378.8 h]; Cost [74493.8 AED] | 74,493.83 | 3,724.69 | T17P122011C0 | PT | C | 17 | P1 | ME | 220 | 11 | BILL 10 | B10 | S2 | 2F | R00 | ACF07 | 220 |  |  |  |  |  |  |  |  |  | MEP |  |  | 0 | 2n |  |  |  |  |  |
| T17P123001C0 |  | PT-17 ; 1st Fix, Inst. of Supports for MEP (PAT RM-1) | 36d | 2011-09-05 A | 2011-11-13 | T17CO07807C0 | 10% | 32.4d | 2011-09-21 | 2011-11-01 | 32.65d | 0d | MECHANICAL [800.4 h]; Cost [45150.4 AED] | 45,150.38 | 4,515.04 | T17P123001C0 | PT | C | 17 | P1 | ME | 230 | 01 | BILL 10 | B10 | S2 | 1F | R00 | ACF04 | 230 |  |  |  |  |  |  |  |  |  | MEP |  |  |  | 1S | M1F |  |  |  |  |
| T17P126001C0 |  | PT-17 ; 1st Fix, Inst of Trunking/Conduiting (PAT RM-1) | 48d | 2011-09-05 A | 2012-01-09 | T17CO07807C0, T17P123001C0 | 5% | 45.6d | 2011-11-02 | 2012-01-03 | 32.65d | 0d | ELECTRICAL [734.4 h]; Cost [37790.1 AED] | 37,790.1 | 1,889.5 | T17P126001C0 | PT | C | 17 | P1 | ME | 260 | 01 | BILL 10 | B10 | S2 | 1F | R00 | ACF04 | 260 |  |  |  |  |  |  |  |  |  | MEP |  |  |  | 1S | M1F |  |  |  |  |
| T17P126009C0 |  | PT-17 ; 2nd Fix, Inst of Wall conduites (PAT RM-1) | 42d | 2011-09-05 A | 2012-03-31 | T17P109201C0 | 5% | 39.9d | 2012-01-21 | 2012-03-11 | 28d | 2.1d | ELECTRICAL [734.4 h]; Cost [37790.1 AED] | 37,790.1 | 1,889.5 | T17P126009C0 | PT | C | 17 | P1 | ME | 260 | 09 | BILL 10 | B10 | S2 | 2F | R00 | ACF07 | 260 |  |  |  |  |  |  |  |  |  | MEP |  |  |  | 2n |  |  |  |  |  |
| T17P127010C0 |  | PT-17 ; 1st Fix, Inst of Trunking for ELV system (PAT RM-1) | 48d | 2011-11-13 | 2012-01-11 | T17CO07807C0, T17P123001C0, T17P126001C0 SS+9d |  |  |  |  | 32.65d | 0d | ELECTRICAL [1512 h]; Cost |  |  | T17P127010C0 | PT | C | 17 | P1 | ME | 270 | 10 | BILL 10 | B10 | S2 | 1F | R00 | ACF04 | 270 |  |  |  |  |  |  |  |  |  | MEP |  |  |  | 1S | M1F |  |  |  |  |
| T17P126013C0 |  | PT-17 ; 1st Fix, Inst of Cable Tray (PAT RM-1) | 48d | 2011-11-23 | 2012-01-22 | T17CO07807C0, T17P123001C0, T17P127010C0 SS+9d |  |  |  |  | 32.65d | 0d | ELECTRICAL [399.6 h]; Cost |  |  | T17P126013C0 | PT | C | 17 | P1 | ME | 260 | 13 | BILL 10 | B10 | S2 | 1F | R00 | ACF04 | 260 |  |  |  |  |  |  |  |  |  | MEP |  |  |  | 1S | M1F |  |  |  |  |
| T17P122019C0 |  | PT-17 ; 1st Fix, Inst of Drainage pipe (ceiling) (PAT RM-1) | 48d | 2011-12-06 | 2012-02-01 | T17P123001C0, T17P126013C0 SS+9d |  |  |  |  | 32.65d | 0d | PLUMBING [1378.8 h]; Cost |  |  | T17P122019C0 | PT | C | 17 | P1 | ME | 220 | 19 | BILL 10 | B10 | S2 | 1F | R00 | ACF04 | 220 |  |  |  |  |  |  |  |  |  | MEP |  |  |  | 1S | M1F |  |  |  |  |
| T17P109702C0 |  | PT-17 ; Installation of Bathroom Pods (PAT RM-1) | 0d | 2011-12-11 | 2011-12-11 | T16P109702C0, T16P209702C0, T17CO07807C0, AAFCI09201R02 FS+118d |  |  |  |  | 175.25d | 0d | Cost |  |  | T10P109701C0 | PT | C | 17 | P1 | BP | 097 | 01 | BILL 10 | B10 | S2 | FG | R00 | ACF06 | 097 |  |  |  |  |  |  |  |  |  |  |  |  |  |  |  | 105 | 1002 |  |  |
| T17P122005C0 |  | PT-17 ; 1st Fix, Inst of Water supply pipe (ceiling) (PAT RM-1) | 60d | 2011-12-17 | 2012-02-27 | T17P122019C0 SS+9d, T17P123001C0 |  |  |  |  | 32.65d | 0d | PLUMBING [4548 h]; Cost |  |  | T17P122005C0 | PT | C | 17 | P1 | ME | 220 | 05 | BILL 10 | B10 | S2 | 1F | R00 | ACF04 | 220 |  |  |  |  |  |  |  |  |  | MEP |  |  |  | 1S | M1F |  |  |  |  |
| T17P109201C0 |  | PT-17 ; Metal Studs (PAT RM-1) | 42d | 2011-12-24 | 2012-02-13 | T17P123001C0, T17CO04407C0 FF, T17CO04405C0 FF |  |  |  |  | 19.65d | 0d | PARTITIONS [3551 h]; PARTITIONS - Metal Studs [493 m]; Cost |  |  | T17P109201C0 | PT | C | 17 | P1 | PT | 092 | 01 | BILL 10 | B10 | S2 | 1F | R00 | ACF06 | 092 |  |  |  |  |  |  |  |  |  | GP |  |  |  |  | PMS | 313 | 944 |  |  |
| T17P121111C0 |  | PT-17 ; 1st Fix, Inst of Sprinkler main pipe (PAT RM-1) | 48d | 2011-12-27 | 2012-02-23 | T17P122005C0 SS+9d, T17P123001C0 |  |  |  |  | 32.65d | 0d | MECHANICAL [853.2 h]; Cost |  |  | T17P121111C0 | PT | C | 17 | P1 | ME | 211 | 11 | BILL 10 | B10 | S2 | 1F | R00 | ACF04 | 211 |  |  |  |  |  |  |  |  |  | MEP |  |  |  | 1S | M1F |  |  |  |  |
| T17P122007C0 |  | PT-17 ; 1st Fix, Inst of Medical Gas pipe (PAT RM-1) | 48d | 2012-01-08 | 2012-03-05 | T17P121111C0 SS+9d, T17P123001C0 |  |  |  |  | 55.9d | 30d | PLUMBING [1149.6 h]; Cost |  |  | T17P122007C0 | PT | C | 17 | P1 | ME | 220 | 07 | BILL 10 | B10 | S2 | 1F | R00 | ACF04 | 220 |  |  |  |  |  |  |  |  |  | MEP |  |  |  | 1S | M1F |  |  |  |  |
| T17P127001C0 |  | PT-17 ; 1st Fix, Wiring/ Cabling work (PAT RM-1) | 48d | 2012-01-22 | 2012-03-19 | T17P126001C0, T17P126013C0, T17P127010C0 |  |  |  |  | 121.65d | 102d | ELECTRICAL [392.4 h]; Cost |  |  | T17P127001C0 | PT | C | 17 | P1 | ME | 270 | 01 | BILL 10 | B10 | S2 | 1F | R00 | ACF04 | 270 |  |  |  |  |  |  |  |  |  | MEP |  |  |  | 1S | M1F |  |  |  |  |
| T17P123017C0 |  | PT-17 ; 1st Fix, Inst of CHW pipe (PAT RM-1) | 54d | 2012-01-29 | 2012-04-02 | T17P121111C0 SS+14d, T17P123001C0, T17P105503C0 FF+18d |  |  |  |  | 19.65d | 0d | MECHANICAL [2467.2 h]; Cost |  |  | T17P123017C0 | PT | C | 17 | P1 | ME | 230 | 17 | BILL 10 | B10 | S2 | 1F | R00 | ACF04 | 230 |  |  |  |  |  |  |  |  |  | MEP |  |  |  | 1S | M1F |  |  |  |  |
| T17P123023C0 |  | PT-17 ; 1st Fix, Inst of Main Ducting (PAT RM-1) | 60d | 2012-02-11 | 2012-04-21 | T17P123001C0, T17P123017C0 SS+10d |  |  |  |  | 45.65d | 0d | MECHANICAL [8022 h]; Cost |  |  | T17P123023C0 | PT | C | 17 | P1 | ME | 230 | 23 | BILL 10 | B10 | S2 | 1F | R00 | ACF04 | 230 |  |  |  |  |  |  |  |  |  | MEP |  |  |  | 1S | M1F |  |  |  |  |
| T17P105503C0 |  | PT-17 ; Ceiling Support for medical equipment (PAT RM-1) | 24d | 2012-02-13 | 2012-03-12 | T17P109201C0, TAFCI22001R20 FS+58d |  |  |  |  | 19.65d | 0d | SECONDARY STEEL [62 h]; STRUCTURAL STEEL [14 T(Fe)]; Cost |  |  | D03EY05503C0 | PT | C | 17 | P1 | SW | 055 | 03 | BILL 10 | B10 | S2 | 03 | R00 | ACF03 | b |  |  |  |  |  |  |  |  |  |  |  |  |  |  |  | 335 | 962 |  |  |
| T17P105511C0 |  | PT-17 ; Wall reinforcement for MEP/Medical (PAT RM-1) | 24d | 2012-02-13 | 2012-03-12 | T17P109201C0, TAFCI22001R02 FS+58d, TAFCO05501R2 FF |  |  |  |  | 49.77d | 23.88d | SECONDARY STEEL [26 h]; Cost |  |  | T17P105511C0 | PT | C | 17 | P1 | SW | 055 | 11 | BILL 10 | B10 | S2 | 03 | R00 | ACF03 | b |  |  |  |  |  |  |  |  |  |  |  |  |  |  |  |  |  |  |  |
| T17P108103C0 |  | PT-17 ; Door Frames (PAT RM-1) | 36d | 2012-02-13 | 2012-03-26 | T17P109201C0, GNHE08101C0 FS+126d, T16PA08103C0 SS+3d |  |  |  |  | 85.65d | 59.75d | ASSORTED DOORS [303 h]; Cost |  |  | T17P108103C0 | PT | C | 17 | P1 | DO | 081 | 03 | BILL 10 | B10 | S2 | DF | R00 | ACF06 | 081 |  |  |  |  |  |  |  |  |  |  |  |  |  |  |  | 316 | 947 | 08 |  |
| T17P109203C0 |  | PT-17 ; Partitions 1st face (PAT RM-1) | 36d | 2012-02-13 | 2012-03-26 | T17P109201C0 |  |  |  |  | 37.77d | 11.88d | PARTITIONS [493 m]; PARTITIONS [2772 h]; Cost |  |  | T17P109203C0 | PT | C | 17 | P1 | PT | 092 | 03 | BILL 10 | B10 | S2 | 2F | R00 | ACF06 | 092 |  |  |  |  |  |  |  |  |  | GP |  |  |  |  | P1F | 314 | 945 |  |  |
| T17P122015C0 |  | PT-17 ; 2nd Fix, Medical Gas pipe (PAT RM-1) | 42d | 2012-02-13 | 2012-04-02 | T17P109201C0, T17P122007C0 SS |  |  |  |  | 25.9d | 0d | PLUMBING [1149.6 h]; Cost |  |  | T17P122015C0 | PT | C | 17 | P1 | ME | 220 | 15 | BILL 10 | B10 | S2 | 2F | R00 | ACF07 | 220 |  |  |  |  |  |  |  |  |  | MEP |  |  |  | 2n |  |  |  |  |  |
| T17P121117C0 |  | PT-17 ; 1st Fix, Inst of Sprinkler branch pipe (PAT RM-1) | 48d | 2012-02-23 | 2012-04-19 | T17P109201C0, T17P121111C0, T17P105503C0 FF+18d |  |  |  |  | 94.65d | 75d | MECHANICAL [561.6 h]; Cost |  |  | T17P121117C0 | PT | C | 17 | P1 | ME | 211 | 17 | BILL 10 | B10 | S2 | 1F | R00 | ACF04 | 211 |  |  |  |  |  |  |  |  |  | MEP |  |  |  | 1S | M1F |  |  |  |  |
| T17P101005C0 |  | PT-17 ; 2nd, Wall Inspection by Consultant (PAT RM-1) | 5.88d | 2012-04-02 | 2012-04-09 | T17P122011C0, T17P122015C0, T17P126009C0 |  |  |  |  | 25.9d | 0d | Labor General [0.6 h]; Cost |  |  | T17P101005C0 | PT | C | 17 | P1 | ME | 010 | 05 | BILL 10 | B10 | S2 | WI | R00 | ACF07 | 010 |  |  |  |  |  |  |  |  |  | MEP |  |  |  | 2n |  |  |  |  |  |
| T17P123009C0 |  | PT-17 ; 2nd Fix, Inst of VAV'S CHW connection (PAT RM-1) | 42d | 2012-04-02 | 2012-05-21 | T17P123017C0 |  |  |  |  | 19.65d | 0d | MECHANICAL [1450.8 h]; Cost |  |  | T17P123009C0 | PT | C | 17 | P1 | ME | 230 | 09 | BILL 10 | B10 | S2 | 2F | R00 | ACF07 | 230 |  |  |  |  |  |  |  |  |  | MEP |  |  |  | 2n |  |  |  |  |  |
| T17P109205C0 |  | PT-17 ; Partitions Closing (PAT RM-1) | 47.88d | 2012-04-09 | 2012-06-04 | T17P101005C0, T17P105511C0, T17P109203C0, T17P122005C0, T17P122019C0, TAFOA09214C1 FF, T17P109702C0 FF, T17P108103C0 FF |  |  |  |  | 25.9d | 0d | PARTITIONS [493 m]; PARTITIONS [3563 h]; Cost |  |  | T17P109205C0 | PT | C | 17 | P1 | PT | 092 | 05 | BILL 10 | B10 | S2 | FF | R00 | ACF06 | 092 |  |  |  |  |  |  |  |  |  | GP |  |  |  |  | P2F | 315 | 946 |  |  |
| T17P123008C0 |  | PT-17 ; 1st Fix, Inst of VCD's/FD's (PAT RM-1) | 48d | 2012-04-21 | 2012-06-17 | T17P123023C0, T17P105503C0 FF+18d |  |  |  |  | 45.65d | 26d | MECHANICAL [1753.2 h]; Cost |  |  | T17P123008C0 | PT | C | 17 | P1 | ME | 230 | 08 | BILL 10 | B10 | S2 | 1F | R00 | ACF04 | 230 |  |  |  |  |  |  |  |  |  | MEP |  |  |  | 1S | M1F |  |  |  |  |
| T17P123015C0 |  | PT-17 ; 2nd Fix, Insulation of CHW pipe & Duct (PAT RM-1) | 48d | 2012-05-21 | 2012-07-17 | T17P123009C0, T17P123017C0, T17P123023C0 |  |  |  |  | 19.65d | 0d | MECHANICAL [3064.8 h]; Cost |  |  | T17P123015C0 | PT | C | 17 | P1 | ME | 230 | 15 | BILL 10 | B10 | S2 | 2F | R00 | ACF07 | 230 |  |  |  |  |  |  |  |  |  | MEP |  |  |  | 2n |  |  |  |  |  |
| T17P107103C0 |  | PT-17 ; Waterproofing (PAT RM-1) | 11.88d | 2012-06-04 | 2012-06-19 | T17P108103C0, T17P109205C0 |  |  |  |  | 64.03d | 44.38d | THERMAL & MOISTURE [504 h]; THERMAL & MOISTURE [3326 m2]; Cost |  |  | T17P107103C0 | PT | C | 17 | P1 | FF | 071 | 03 | BILL 10 | B10 | S2 | 01 | R00 | ACF03 | 071 |  |  |  |  |  |  |  |  |  |  |  |  |  |  |  | 105 | 999 |  |  |
| T17P109901C0 |  | PT-17 ; Wall Prime & 1st coat (PAT RM-1) | 30d | 2012-06-04 | 2012-07-10 | T17P109205C0 |  |  |  |  | 25.9d | 0d | WALL PAINT [587 h]; WALL PAINT [731 m2]; Cost |  |  | T17P109901C0 | PT | C | 17 | P1 | PA | 099 | 01 | BILL 10 | B10 | S2 | 01 | R00 | ACF06 | 099 |  |  |  |  |  |  |  |  |  |  |  |  |  |  |  | 328 | 956 |  |  |
| T17P126005C0 |  | PT-17 ; 2nd Fix, Wiring for Power/Lighting/Emergency (PAT RM-1) | 42d | 2012-06-04 | 2012-07-24 | T17P109205C0 |  |  |  |  | 111.9d | 0d | ELECTRICAL [392.4 h]; Cost |  |  | T17P126005C0 | PT | C | 17 | P1 | ME | 260 | 05 | BILL 10 | B10 | S2 | 2F | R00 | ACF07 | 260 |  |  |  |  |  |  |  |  |  | MEP |  |  |  | 2n |  |  |  |  |  |
| T17P126007C0 |  | PT-17 ; 2nd Fix, Cable Pulling (PAT RM-1) | 48d | 2012-06-04 | 2012-07-31 | T17P109201C0 SS+6d, T17P109205C0 |  |  |  |  | 147.9d | 128.25d | ELECTRICAL [2683.2 h]; Cost |  |  | T17P126007C0 | PT | C | 17 | P1 | ME | 260 | 07 | BILL 10 | B10 | S2 | 2F | R00 | ACF07 | 260 |  |  |  |  |  |  |  |  |  | MEP |  |  |  | 2n |  |  |  |  |  |
| T17P126011C0 |  | PT-17 ; 2nd Fix, Inst of Equipment (DB) (PAT RM-1) | 54d | 2012-06-04 | 2012-08-07 | T17P109205C0 |  |  |  |  | 130.65d | 50.25d | ELECTRICAL [878.4 h]; Cost |  |  | T17P126011C0 | PT | C | 17 | P1 | ME | 260 | 11 | BILL 10 | B10 | S2 | 2F | R00 | ACF04 | 260 |  |  |  |  |  |  |  |  |  | MEP |  |  |  | 2n |  |  |  |  | E |
| T17P126053C0 |  | PT-17 ; 2nd Fix, Wiring / Cabling (PAT RM-1) | 42d | 2012-06-04 | 2012-07-24 | T17P109203C0, T17P109205C0 |  |  |  |  | 33.9d | 14.25d | ELECTRICAL [392.4 h]; Cost |  |  | T17P126053C0 | PT | C | 17 | P1 | ME | 260 | 53 | BILL 10 | B10 | S2 | 2F | R00 | ACF07 | 260 |  |  |  |  |  |  |  |  |  | MEP |  |  |  | 2n |  | 389 | 977 |  |  |
| T17P105501C0 |  | PT-17 ; Handrails & balustrade (PAT RM-1) | 34.75d | 2012-07-10 | 2012-08-22 | T17P109901C0 |  |  |  |  | 179.9d | 160.25d | SECONDARY STEEL [230 h]; Cost |  |  | T17P105501C0 | PT | C | 17 | P1 | SW | 055 | 01 | BILL 10 | B10 | S2 | 01 | R00 | ACF03 | a |  |  |  |  |  |  |  |  |  |  |  |  |  |  |  |  |  |  |  |
| T17P109501C0 |  | PT-17 ; Ceiling Grid and Service Tile (PAT RM-1) | 20d | 2012-07-17 | 2012-08-09 | T17P105503C0, T17P109205C0 SS+15d, T17P121117C0, T17P123008C0, T17P123009C0, T17P123015C0, T17P127001C0, T17P126053C0 FF, T17P109901C0 |  |  |  |  | 19.65d | 0d | CEILING GRID FOR GYPSUM [4870 h]; CEILING GRID FOR GYPSUM [416.8 m2]; Cost |  |  | T17P109501C0 | PT | C | 17 | P1 | CE | 095 | 01 | BILL 10 | B10 | S2 | 01 | R00 | ACF06 | 095 |  |  |  |  |  |  |  |  |  |  |  |  |  |  |  | 323 | 952 |  |  |
| T17P109510C0 |  | PT-17 ; Patient Lift Ceiling Rail (by others) (PAT RM-1) | 30d | 2012-07-17 | 2012-08-23 | T17P109501C0 SS |  |  |  |  | 129.65d | 110d | Labor General [0.1 h]; Cost |  |  | I06P109501C0 | PT | C | 17 | P1 | CE | 095 | 10 | BILL 10 | B10 | S2 | 02 | R00 | ACF06 | 095 |  |  |  |  |  |  |  |  |  |  |  |  |  |  |  | 323 | 952 |  |  |
| T17P126015C0 |  | PT-17 ; Final Fix, Termination & Gladding of Cables (PAT RM-1) | 36d | 2012-07-24 | 2012-09-06 | T17P126005C0 |  |  |  |  | 111.9d | 92.25d | ELECTRICAL [148.8 h]; Cost |  |  | T17P126015C0 | PT | C | 17 | P1 | ME | 260 | 15 | BILL 10 | B10 | S2 | FF | R00 | ACF07 | 260 |  |  |  |  |  |  |  |  |  | MEP |  |  |  | FF |  |  |  |  |  |
| T17P109305C0 |  | PT-17 ; Flooring (Terrazzo) (PAT RM-1) | 30d | 2012-08-09 | 2012-09-16 | T17P107103C0, T17P109501C0 |  |  |  |  | 19.65d | 0d | TERRAZO FLOOR [1427 m2]; TERRAZO FLOOR [2568 h]; Cost |  |  | T17P109305C0 | PT | C | 17 | P1 | FF | 096 | 05 | BILL 10 | B10 | S2 | 07 | R00 | ACF06 | TZ |  |  |  |  |  |  |  |  |  |  |  |  |  |  |  | 106 | 1000 |  |  |
| T17P109601C0 |  | PT-17 ; Flooring (Rubber & etc) (PAT RM-1) | 30d | 2012-08-09 | 2012-09-16 | T17P109501C0 |  |  |  |  | 57.65d | 0d | RUBBER FLOOR [48 h]; RUBBER FLOOR [102 m2]; Cost |  |  | T17P109601C0 | PT | C | 17 | P1 | FF | 096 | 01 | BILL 10 | B10 | S2 | 03 | R00 | ACF06 | RF |  |  |  |  |  |  |  |  |  |  |  |  |  |  |  | 326 | 955 |  |  |
| T17P109905C0 |  | PT-17 ; Ceiling Prime & 1st coat (PAT RM-1) | 30d | 2012-08-09 | 2012-09-16 | T17P109501C0 |  |  |  |  | 128.4d | 0d | CEILING PAINT [36 h]; CEILING PAINT [43 m2]; Cost |  |  | T17P109905C0 | PT | C | 17 | P1 | PA | 099 | 05 | BILL 10 | B10 | S2 | 01 | R00 | ACF06 | 099 |  |  |  |  |  |  |  |  |  |  |  |  |  |  |  | 330 | 958 |  |  |
| T17P121115C0 |  | PT-17 ; 2nd Fix, Inst of Sprinkler droppers (PAT RM-1) | 42d | 2012-08-09 | 2012-09-30 | T17P109501C0 |  |  |  |  | 55.65d | 0d | MECHANICAL [1602 h]; Cost |  |  | T17P121115C0 | PT | C | 17 | P1 | ME | 211 | 15 | BILL 10 | B10 | S2 | 2F | R00 | ACF07 | 211 |  |  |  |  |  |  |  |  |  | MEP |  |  |  | 2n |  |  |  |  |  |
| T17P123021C0 |  | PT-17 ; 2nd Fix, Inst of Flexible Duct & Plenum boxes (PAT RM-1) | 42d | 2012-08-09 | 2012-09-30 | T17P109205C0, T17P109501C0 |  |  |  |  | 55.65d | 0d | MECHANICAL [30 h]; Cost |  |  | T17P123021C0 | PT | C | 17 | P1 | ME | 230 | 21 | BILL 10 | B10 | S2 | 2F | R00 | ACF07 | 230 |  |  |  |  |  |  |  |  |  | MEP |  |  |  | 2n |  |  |  |  |  |
| T17P126017C0 |  | PT-17 ; Final Fix, Inst of Ceiling rose (PAT RM-1) | 36d | 2012-08-09 | 2012-09-23 | T17P109501C0 |  |  |  |  | 49.65d | 0d | ELECTRICAL [61.2 h]; Cost |  |  | T17P126017C0 | PT | C | 17 | P1 | ME | 260 | 17 | BILL 10 | B10 | S2 | FF | R00 | ACF07 | 260 |  |  |  |  |  |  |  |  |  | MEP |  |  |  | FF |  |  |  |  |  |
| T17P127002C0 |  | PT-17 ; 2nd Fix, Wiring Droppers (PAT RM-1) | 42d | 2012-08-09 | 2012-09-30 | T17P109501C0 |  |  |  |  | 49.65d | 0d | ELECTRICAL [392.4 h]; Cost |  |  | T17P127002C0 | PT | C | 17 | P1 | ME | 270 | 02 | BILL 10 | B10 | S2 | 2F | R00 | ACF07 | 270 |  |  |  |  |  |  |  |  |  | MEP |  |  |  | 2n |  |  |  |  |  |
| T17P127020C0 |  | PT-17 ; 2nd Fix, Inst of ELV Equipment (Panels) (PAT RM-1) | 48d | 2012-08-09 | 2012-10-07 | T17P109205C0, T17P109501C0 |  |  |  |  | 80.4d | 0d | ELECTRICAL [1819.2 h]; Cost |  |  | T17P127020C0 | PT | C | 17 | P1 | ME | 270 | 20 | BILL 10 | B10 | S2 | 2F | R00 | ACF04 | 270 |  |  |  |  |  |  |  |  |  | MEP |  |  |  | 2n |  |  |  |  | E |
| T17P140303C0 |  | PT-17 ; Final Fix, Pneumatic Station (PAT RM-1) | 36d | 2012-08-09 | 2012-09-23 | T17P109501C0 |  |  |  |  | 140.4d | 120.75d | MECHANICAL [2974.8 h]; Cost |  |  | T17P140303C0 | PT | C | 17 | P1 | ME | 403 | 03 | BILL 10 | B10 | S2 | FF | R00 | ACF07 | 403 |  |  |  |  |  |  |  |  |  | MEP |  |  |  | FF |  |  |  |  |  |
| T17P106101C0 |  | PT-17 ; Wood / caseworks (PAT RM-1) | 48d | 2012-09-16 | 2012-11-13 | T17CO04407C0, T17P109501C0, T17P109601C0, T17P109901C0, TAFWA00101M0 |  |  |  |  | 61.65d | 0d | WOOD WORK/CASEWORK [873.9 no]; WOOD WORK/CASEWORK [1915 h]; Cost |  |  | T17P106101C0 | PT | C | 17 | P1 | WO | 061 | 01 | BILL 10 | B10 | S2 | WW | R00 | ACF06 | 061 |  |  |  |  |  |  |  |  |  |  |  |  |  |  |  | 332 | 960 |  |  |
| T17P106102C0 |  | PT-17 ; Head/Foot Wall (PAT RM-1) | 54d | 2012-09-16 | 2012-11-21 | T17CO04407C0, T17P109501C0, TAFWA00101M0, T17P106101C0 SS |  |  |  |  | 74.4d | 0d | WOOD WORK/CASEWORK [1649 h]; Cost |  |  | T17P106102C0 | PT | C | 17 | P1 | WO | 061 | 02 | BILL 10 | B10 | S2 | WW | R00 | ACF06 | 061 |  |  |  |  |  |  |  |  |  |  |  |  |  |  |  | 332 | 960 |  |  |
| T17P108107C0 |  | PT-17 ; Doors (PAT RM-1) | 36d | 2012-09-16 | 2012-10-30 | T17P108103C0, T17P109501C0, T17P109601C0, T17P109901C0 |  |  |  |  | 93.9d | 0d | ASSORTED DOORS [610 h]; ASSORTED DOORS [61 no]; Cost |  |  | T17P108107C0 | PT | C | 17 | P1 | DO | 081 | 07 | BILL 10 | B10 | S2 | DR | R00 | ACF06 | 081 |  |  |  |  |  |  |  |  |  |  |  |  |  |  |  | 317 | 948 | 08 |  |
| T17P109903C0 |  | PT-17 ; Wall Final Paint (PAT RM-1) | 30d | 2012-09-16 | 2012-10-21 | T17P109901C0, T17P109905C0, T17P109501C0 |  |  |  |  | 128.4d | 54d | WALL PAINT [316 h]; WALL PAINT [394 m2]; Cost |  |  | T17P109903C0 | PT | C | 17 | P1 | PA | 099 | 03 | BILL 10 | B10 | S2 | 02 | R00 | ACF06 | 099 |  |  |  |  |  |  |  |  |  |  |  |  |  |  |  | 329 | 957 |  |  |
| T17P111071C0 |  | PT-17 ; Food Service Equipment (PAT RM-1) | 52d | 2012-09-16 | 2012-11-19 | T17P109601C0 |  |  |  |  | 57.65d | 38d | FF&E [3718 h]; Cost |  |  | T17P111071C0 | PT | C | 17 | P1 | EQ | 110 | 71 | BILL 10 | B10 | S2 | 06 | R00 | ACF08 | KE |  |  |  |  |  |  |  |  |  | FK |  |  |  |  |  | 313 | 944 |  |  |
| T17P122025C0 |  | PT-17 ; Final Fix, Inst of Sanitary Ware (PAT RM-1) | 42d | 2012-09-16 | 2012-11-06 | T17P109205C0, T17P109305C0 |  |  |  |  | 19.65d | 0d | PLUMBING [3690 h]; Cost |  |  | T17P122025C0 | PT | C | 17 | P1 | ME | 220 | 25 | BILL 10 | B10 | S2 | FF | R00 | ACF07 | 220 |  |  |  |  |  |  |  |  |  | MEP |  |  |  | FF |  |  |  |  |  |
| T17P126003C0 |  | PT-17 ; Final Fix, Inst of Light fittings (PAT RM-1) | 48d | 2012-09-23 | 2012-11-21 | T17P109501C0, T17P126017C0 |  |  |  |  | 49.65d | 30d | ELECTRICAL [7815.6 h]; Cost |  |  | T17P126003C0 | PT | C | 17 | P1 | ME | 260 | 03 | BILL 10 | B10 | S2 | FF | R00 | ACF07 | 260 |  |  |  |  |  |  |  |  |  | MEP |  |  |  | FF |  |  |  |  |  |

| ID | WBS | Activity | Duration | Start | Finish | Predecessors | Complete | Remaining | Planned start | Planned finish | Total float | Free float | Resources | Cost | Actual cost | change id | CCAD BUILDING(SET) | CCAD PHASE(SET) | CCAD FLOOR(SET) | CCAD ZONE(SET) | CCAD WORK(SET) | CCAD SECTION(SET) | CCAD SERIAL No.(SET) | CCAD SUB ZONE MEP(SET) | CCAD CBS(SET) | CCAD BILL(SET) | CCAD HANDOVER(SET) | CCAD TAG(SET) | CCAD REV(SET) | CCADACF (SET) | CCAD CSA | CCAD SSCF | Change Order # | NEW ACTIVITY ID | CCAD DIVISION(SET) | U% | Act Selector % | CCAD MEQ |
| --- | --- | --- | --- | --- | --- | --- | --- | --- | --- | --- | --- | --- | --- | --- | --- | --- | --- | --- | --- | --- | --- | --- | --- | --- | --- | --- | --- | --- | --- | --- | --- | --- | --- | --- | --- | --- | --- | --- |
| T17P121113C0 |  | PT-17 ; Final Fix, Inst of Sprinklers head/ Extinguisher (PAT RM-1) | 36d | 2012-09-30 | 2012-11-13 | T17P109501C0, T17P121115C0 |  |  |  |  | 55.65d | 36d | MECHANICAL [234 h]; Cost |  |  | T17P121113C0 | PT | C | 17 | P1 | ME | 211 | 13 | FF | BILL 10 | B10 | S2 | FF | R00 | ACF07 | MEP | 211 |  |  |  |  |  |  |
| T17P123019C0 |  | PT-17 ; Final Fix, Inst of Grilles & Diffusers (PAT RM-1) | 36d | 2012-09-30 | 2012-11-13 | T17P109501C0, T17P123021C0 |  |  |  |  | 55.65d | 36d | MECHANICAL [1498.8 h]; Cost |  |  | T17P123019C0 | PT | C | 17 | P1 | ME | 230 | 19 | FF | BILL 10 | B10 | S2 | FF | R00 | ACF07 | MEP | 230 |  |  |  |  |  |  |
| T17P127030C0 |  | PT-17 ; Final Fix, Inst of ELV device (Detector/Speaker) (PAT RM-1) | 42d | 2012-09-30 | 2012-11-21 | T17P109501C0, T17P127002C0 |  |  |  |  | 49.65d | 30d | ELECTRICAL [3571.2 h]; Cost |  |  | T17P127030C0 | PT | C | 17 | P1 | ME | 270 | 30 | FF | BILL 10 | B10 | S2 | FF | R00 | ACF07 | MEP | 270 |  |  |  |  |  |  |
| T17P109701C0 |  | PT-17 ; Wall finishes (ST, WD, WC) (PAT RM-1) | 36d | 2012-10-07 | 2012-11-21 | T17P126011C0, T17P127020C0, T17P109501C0, T17P109601C0, T17P109305C0 |  |  |  |  | 80.4d | 0d | ASSORTED WALL FINISH [519 h]; ASSORTED WALL FINISH [595 m2]; Cost |  |  | T17P109701C0 | PT | C | 17 | P1 | WF | 097 | 01 |  | BILL 10 | B10 | S2 | 01 | R00 | ACF06 |  | 097 | 105 | 1002 |  |  |  |  |
| T17P108709C0 |  | PT-17 ; Ironmongery (PAT RM-1) | 28.5d | 2012-10-30 | 2012-12-05 | T17P108107C0 |  |  |  |  | 93.9d | 74.25d | IRONMONGERY [870 h]; IRONMONGERY [87 no]; Cost |  |  | T17P108709C0 | PT | C | 17 | P1 | DO | 087 | 09 |  | BILL 10 | B10 | S2 | IM | R00 | ACF06 |  | 087 | 322 | 951 | 08 |  |  |  |
| T17P122021C0 |  | PT-17 ; Final Fix, Terminate Sanitary Ware & Appliances (PAT RM-1) | 42d | 2012-11-06 | 2012-12-27 | T17P122011C0, T17P122025C0 |  |  |  |  | 19.65d | 0d | PLUMBING [3361.2 h]; Cost |  |  | T17P122021C0 | PT | C | 17 | P1 | ME | 220 | 21 | FF | BILL 10 | B10 | S2 | FF | R00 | ACF07 | MEP | 220 |  |  |  |  |  |  |
| T17P111001C0 |  | PT-17 ; Wall Protection (WP, CG, WG, FCG) (PAT RM-1) | 24d | 2012-11-21 | 2012-12-20 | T17P109701C0, T17P109903C0 SS |  |  |  |  | 80.4d | 60.75d | FF&E [27 h]; Cost |  |  | T17P111001C0 | PT | C | 17 | P1 | WF | 110 | 01 |  | BILL 10 | B10 | S2 | 03 | R00 | ACF08 |  | b | 326 | 1001 |  |  |  |  |
| T17P122029C0 |  | PT-17 ; Final Fix, Medical Gas pipe (PAT RM-1) | 18d | 2012-11-21 | 2012-12-13 | T17P109501C0, T17P106102C0 |  |  |  |  | 74.4d | 54.75d | PLUMBING [1149.6 h]; Cost |  |  | T17P122029C0 | PT | C | 17 | P1 | ME | 220 | 29 | FF | BILL 10 | B10 | S2 | FF | R00 | ACF07 | MEP | 220 |  |  |  |  |  |  |
| T17P101006C0 |  | PT-17 ; 2nd, Ceiling Inspection by Consultants (PAT RM-1) | 6d | 2012-12-27 | 2013-01-05 | T17P121115C0, T17P123009C0, T17P123015C0, T17P127002C0, T17P109501C0, T17P121113C0, T17P123019C0, T17P122021C0, T17P126015C0, T17P126017C0, T17P126003C0, T17P127030C0 |  |  |  |  | 19.65d | 0d | Labor General [0.6 h]; Cost |  |  | T17P101006C0 | PT | C | 17 | P1 | ME | 010 | 06 | 2n | BILL 10 | B10 | S2 | CI | R00 | ACF07 | MEP | 010 |  |  |  |  |  |  |
| T17P109503C0 |  | PT-17 ; Ceiling closure - ACT/Gypsum (PAT RM-1) | 18.75d | 2013-01-05 | 2013-01-28 | T17P101006C0, T17P109510C0, T17P121115C0, T17P126005C0, T17P127001C0, T17P127002C0, TAFOA09513C1 FF, T17P106101C0, T17P123021C0, T17P126007C0, T17P111071C0 |  |  |  |  | 19.65d | 0d | ASSORTED CEILING FINISH [549.81 h]; CEILING GYPSUM [136.74 h]; ASSORTED CEILING FINISH [894 m2]; CEILING GYPSUM [417 m2]; Cost |  |  | T17P109503C0 | PT | C | 17 | P1 | CE | 095 | 03 |  | BILL 10 | B10 | S2 | 02 | R00 | ACF06 |  | 095 | 324 | 953 |  |  |  |  |
| T17P109677C1 |  | PT-17, Carpet Tile Finish (Patient Room-1) | 0d | 2013-01-28 | 2013-01-28 | T17P109903C0 SS, T17P109907C0 SS |  |  |  |  | 35.65d | 4d | Cost |  |  |  | PT | C | 17 | P1 | FF | 096 |  |  |  | B10 |  |  | R00 | ACF06 | CPT | CPT |  |  |  |  |  |  |
| T17P109907C0 |  | PT-17 ; Ceiling Final paint (PAT RM-1) | 18d | 2013-01-28 | 2013-02-18 | T17P109601C0, T17P109905C0, T17P109503C0 |  |  |  |  | 31.65d | 0d | CEILING PAINT [20 h]; CEILING PAINT [23 m2]; Cost |  |  | T17P109907C0 | PT | C | 17 | P1 | PA | 099 | 07 |  | BILL 10 | B10 | S2 | 02 | R00 | ACF06 |  | 099 | 331 | 959 |  |  |  |  |
| T17P111003C0 |  | PT-17 ; FF & E (PAT RM-1) | 18d | 2013-01-28 | 2013-02-18 | T17P109601C0, T17P106101C0, T17P109503C0 |  |  |  |  | 31.65d | 12d | FF&E [1067 h]; Cost |  |  | T17P111003C0 | PT | C | 17 | P1 | WO | 110 | 03 |  | BILL 10 | B10 | S2 | 04 | R00 | ACF08 |  | a | 333 | 961 |  |  |  |  |
| T17P122027C0 |  | PT-17 ; Final Fix, Inst of All drain (PAT RM-1) | 18d | 2013-01-28 | 2013-02-18 | T17P109305C0, T17P109503C0 |  |  |  |  | 19.65d | 0d | PLUMBING [1378.8 h]; Cost |  |  | T17P122027C0 | PT | C | 17 | P1 | ME | 220 | 27 | FF | BILL 10 | B10 | S2 | FF | R00 | ACF07 | MEP | 220 |  |  |  | 0 |  |  |
| T17P126019C0 |  | PT-17 ; Final Fix, Inst of Switch/Sockets (PAT RM-1) | 18d | 2013-01-28 | 2013-02-18 | T17P109901C0, T17P109503C0 |  |  |  |  | 19.65d | 0d | ELECTRICAL [362.4 h]; Cost |  |  | T17P126019C0 | PT | C | 17 | P1 | ME | 260 | 19 | FF | BILL 10 | B10 | S2 | FF | R00 | ACF07 | MEP | 260 |  |  |  |  |  |  |
|  | 10 | **Precommissioning Tesing & snagging (PAT RM-1)** |  | 2013-02-18 | 2013-04-02 |  |  |  |  |  |  |  |  |  |  |  |  |  |  |  |  |  |  |  |  |  |  |  |  |  |  |  |  |  |  |  |  |  |
| T16TS01806C0 |  | PT-17 ; MEP de-snag, FIREM sign-off | 12d | 2013-02-18 | 2013-03-04 | T17P122025C0, T17P122027C0, T17P126015C0, T17P122021C0, T17P121113C0, T17P123019C0, T17P140303C0, T17P122029C0, T17P126017C0, T17P126003C0, T17P127030C0, T17P126019C0 |  |  |  |  | 19.65d | 0d | TESTING & COMMISSIONING [510 h]; Cost |  |  | T16TS01801C0 | PT | C | 16 | TS | SC | 018 | 01 |  | BILL 10 | B10 | S2 | 01 | R00 | ACF07 |  | 018 |  |  |  |  |  |  |
| T16TS01811C0 |  | PT-17 ; Touch-up & Clean / JV inspection /CIR /De-snag | 18d | 2013-03-04 | 2013-03-25 | T16TS01806C0, T17P105501C0, T17P106101C0, T17P106102C0, T17P108709C0, T17P109305C0, T17P109601C0, T17P109701C0, T17P109903C0, T17P109907C0, T17P111001C0, T17P111003C0, T17P111071C0, T17P109503C0 |  |  |  |  | 19.65d | 0d | TESTING & COMMISSIONING [128 h]; Cost |  |  | T16TS01802C0 | PT | C | 16 | TS | SC | 018 | 02 |  | BILL 10 | B10 | S2 | 02 | R00 | ACF07 |  | 018 |  |  |  |  |  |  |
| T16TS01816C0 |  | PT-17 ; Consultant's final de-snag inspection | 7d | 2013-03-25 | 2013-04-02 | T16TS01811C0, T16TS01817C0 |  |  |  |  | 19.65d | 0d | Labor General [1 h]; Cost |  |  | T16TS01803C0 | PT | C | 16 | TS | SC | 018 | 03 |  | BILL 10 | B10 | S2 | 03 | R00 | ACF07 |  | 018 |  |  |  |  |  |  |
|  | 03 | **PAT RM-2** |  | 2011-09-05 | 2013-03-03 |  |  |  |  |  |  |  |  |  |  |  |  |  |  |  |  |  |  |  |  |  |  |  |  |  |  |  |  |  |  |  |  |  |
| T17P222011C0 |  | PT-17 ; 2nd Fix, Drainage/Water pipe (wall) (PAT RM-2) | 42d | 2011-09-05 A | 2012-03-31 | T17P209201C0 | 5% | 39.9d | 2012-01-21 | 2012-03-11 | 40d | 2.1d | PLUMBING [1378.8 h]; Cost [74493.8 AED] | 74,493.83 | 3,724.69 | T17P222011C0 | PT | C | 17 | P2 | ME | 220 | 11 | 2n | BILL 10 | B10 | S2 | 2F | R00 | ACF07 | MEP | 220 |  |  |  | 0 |  |  |
| T17P223001C0 |  | PT-17 ; 1st Fix, Inst. of Supports for MEP (PAT RM-2) | 36d | 2011-09-05 A | 2011-11-13 | T17CO07807C0 | 10% | 32.4d | 2011-09-21 | 2011-11-01 | 44.65d | 0d | MECHANICAL [800.4 h]; Cost [45150.4 AED] | 45,150.38 | 4,515.04 | T17P223001C0 | PT | C | 17 | P2 | ME | 230 | 01 | 1S | BILL 10 | B10 | S2 | 1F | R00 | ACF04 | MEP | 230 |  |  |  |  | M1F |  |
| T17P226001C0 |  | PT-17 ; 1st Fix, Inst of Trunking/Conduiting (PAT RM-2) | 48d | 2011-09-05 A | 2012-01-09 | T17CO07807C0, T17P223001C0 | 5% | 45.6d | 2011-11-02 | 2012-01-03 | 44.65d | 0d | ELECTRICAL [734.4 h]; Cost [37790.1 AED] | 37,790.1 | 1,889.5 | T17P226001C0 | PT | C | 17 | P2 | ME | 260 | 01 | 1S | BILL 10 | B10 | S2 | 1F | R00 | ACF04 | MEP | 260 |  |  |  |  | M1F |  |
| T17P226009C0 |  | PT-17 ; 2nd Fix, Inst of Wall conduites (PAT RM-2) | 42d | 2011-09-05 A | 2012-03-31 | T17P209201C0 | 5% | 39.9d | 2012-01-21 | 2012-03-11 | 40d | 2.1d | ELECTRICAL [734.4 h]; Cost [37790.1 AED] | 37,790.1 | 1,889.5 | T17P226009C0 | PT | C | 17 | P2 | ME | 260 | 09 | 2n | BILL 10 | B10 | S2 | 2F | R00 | ACF07 | MEP | 260 |  |  |  |  |  |  |
| T17P227010C0 |  | PT-17 ; 1st Fix, Inst of Trunking for ELV system (PAT RM-2) | 48d | 2011-11-13 | 2012-01-11 | T17CO07807C0, T17P223001C0, T17P226001C0 SS+12d |  |  |  |  | 44.65d | 0d | ELECTRICAL [1512 h]; Cost |  |  | T17P227010C0 | PT | C | 17 | P2 | ME | 270 | 10 | 1S | BILL 10 | B10 | S2 | 1F | R00 | ACF04 | MEP | 270 |  |  |  |  | M1F |  |
| T17P226013C0 |  | PT-17 ; 1st Fix, Inst of Cable Tray (PAT RM-2) | 48d | 2011-11-23 | 2012-01-22 | T17CO07807C0, T17P223001C0, T17P227010C0 SS+9d |  |  |  |  | 44.65d | 0d | ELECTRICAL [399.6 h]; Cost |  |  | T17P226013C0 | PT | C | 17 | P2 | ME | 260 | 13 | 1S | BILL 10 | B10 | S2 | 1F | R00 | ACF04 | MEP | 260 |  |  |  |  | M1F |  |
| T17P222019C0 |  | PT-17 ; 1st Fix, Inst of Drainage pipe (ceiling) (PAT RM-2) | 48d | 2011-12-06 | 2012-02-01 | T17P223001C0, T17P226013C0 SS+9d |  |  |  |  | 44.65d | 0d | PLUMBING [1378.8 h]; Cost |  |  | T17P222019C0 | PT | C | 17 | P2 | ME | 220 | 19 | 1S | BILL 10 | B10 | S2 | 1F | R00 | ACF04 | MEP | 220 |  |  |  |  | M1F |  |
| T17P209702C0 |  | PT-17 ; Installation of Bathroom Pods (PAT RM-2) | 0d | 2011-12-11 | 2011-12-11 | T17P109702C0 SS, T17CO07807C0, AAFCI09201R02 FS+118d |  |  |  |  | 176.25d | 0d | Cost |  |  | T10P109701C0 | PT | C | 17 | P2 | BP | 097 | 01 |  | BILL 10 | B10 | S2 | FG | R00 | ACF06 |  | 097 | 105 | 1002 |  |  |  |  |
| T17P222005C0 |  | PT-17 ; 1st Fix, Inst of Water supply pipe (ceiling) (PAT RM-2) | 60d | 2011-12-17 | 2012-02-27 | T17P222019C0 SS+9d, T17P223001C0 |  |  |  |  | 44.65d | 0d | PLUMBING [4548 h]; Cost |  |  | T17P222005C0 | PT | C | 17 | P2 | ME | 220 | 05 | 1S | BILL 10 | B10 | S2 | 1F | R00 | ACF04 | MEP | 220 |  |  |  |  | M1F |  |
| T17P209201C0 |  | PT-17 ; Metal Studs (PAT RM-2) | 42d | 2011-12-24 | 2012-02-13 | T17P223001C0, T17CO04407C0 FF, T17CO04405C0 FF |  |  |  |  | 31.65d | 0d | PARTITIONS [2367 h]; PARTITIONS - Metal Studs [328 m]; Cost |  |  | T17P209201C0 | PT | C | 17 | P2 | PT | 092 | 01 |  | BILL 10 | B10 | S2 | 1F | R00 | ACF06 | GP | 092 | 313 | 944 |  |  | PMS |  |
| T17P221111C0 |  | PT-17 ; 1st Fix, Inst of Sprinkler main pipe (PAT RM-2) | 48d | 2011-12-27 | 2012-02-23 | T17P222005C0 SS+9d, T17P223001C0 |  |  |  |  | 44.65d | 0d | MECHANICAL [853.2 h]; Cost |  |  | T17P221111C0 | PT | C | 17 | P2 | ME | 211 | 11 | 1S | BILL 10 | B10 | S2 | 1F | R00 | ACF04 | MEP | 211 |  |  |  |  | M1F |  |
| T17P222007C0 |  | PT-17 ; 1st Fix, Inst of Medical Gas pipe (PAT RM-2) | 48d | 2012-01-08 | 2012-03-05 | T17P221111C0 SS+9d, T17P223001C0 |  |  |  |  | 67.9d | 30d | PLUMBING [1149.6 h]; Cost |  |  | T17P222007C0 | PT | C | 17 | P2 | ME | 220 | 07 | 1S | BILL 10 | B10 | S2 | 1F | R00 | ACF04 | MEP | 220 |  |  |  |  | M1F |  |
| T17P227001C0 |  | PT-17 ; 1st Fix, Wiring/ Cabling work (PAT RM-2) | 48d | 2012-01-22 | 2012-03-19 | T17P226001C0, T17P226013C0, T17P227010C0 |  |  |  |  | 133.65d | 102d | ELECTRICAL [392.4 h]; Cost |  |  | T17P227001C0 | PT | C | 17 | P2 | ME | 270 | 01 | 1S | BILL 10 | B10 | S2 | 1F | R00 | ACF04 | MEP | 270 |  |  |  |  | M1F |  |
| T17P223017C0 |  | PT-17 ; 1st Fix, Inst of CHW pipe (PAT RM-2) | 54d | 2012-01-29 | 2012-04-02 | T17P221111C0 SS+14d, T17P223001C0, T17P205503C0 FF+18d |  |  |  |  | 31.65d | 0d | MECHANICAL [2467.2 h]; Cost |  |  | T17P223017C0 | PT | C | 17 | P2 | ME | 230 | 17 | 1S | BILL 10 | B10 | S2 | 1F | R00 | ACF04 | MEP | 230 |  |  |  |  | M1F |  |
| T17P223023C0 |  | PT-17 ; 1st Fix, Inst of Main Ducting (PAT RM-2) | 60d | 2012-02-11 | 2012-04-21 | T17P223001C0, T17P223017C0 SS+10d |  |  |  |  | 57.65d | 0d | MECHANICAL [8022 h]; Cost |  |  | T17P223023C0 | PT | C | 17 | P2 | ME | 230 | 23 | 1S | BILL 10 | B10 | S2 | 1F | R00 | ACF04 | MEP | 230 |  |  |  |  | M1F |  |
| T17P205503C0 |  | PT-17 ; Ceiling Support for medical equipment (PAT RM-2) | 24d | 2012-02-13 | 2012-03-12 | T17P209201C0, TAFCI22001R20 FS+58d |  |  |  |  | 31.65d | 0d | SECONDARY STEEL [72 h]; STRUCTURAL STEEL [15 T(Fe)]; Cost |  |  | D03EY05503C0 | PT | C | 17 | P2 | SW | 055 | 03 |  | BILL 10 | B10 | S2 | 03 | R00 | ACF03 |  | b | 335 | 962 |  |  |  |  |
| T17P205511C0 |  | PT-17 ; Wall reinforcement for MEP/Medical (PAT RM-2) | 24d | 2012-02-13 | 2012-03-12 | T17P209201C0, TAFCI22001R02 FS+58d |  |  |  |  | 61.77d | 23.88d | SECONDARY STEEL [31 h]; Cost |  |  | T17P205511C0 | PT | C | 17 | P2 | SW | 055 | 11 |  | BILL 10 | B10 | S2 | 03 | R00 | ACF03 |  | b |  |  |  |  |  |  |
| T17P208103C0 |  | PT-17 ; Door Frames (PAT RM-2) | 36d | 2012-02-13 | 2012-03-26 | T17P209201C0, GNHE08101C0 FS+126d |  |  |  |  | 97.65d | 59.75d | ASSORTED DOORS [215 h]; Cost |  |  | T17P208103C0 | PT | C | 17 | P2 | DO | 081 | 03 |  | BILL 10 | B10 | S2 | DF | R00 | ACF06 |  | 081 | 316 | 947 | 08 |  |  |  |
| T17P209203C0 |  | PT-17 ; Partitions 1st face (PAT RM-2) | 36d | 2012-02-13 | 2012-03-26 | T17P209201C0 |  |  |  |  | 49.77d | 11.88d | PARTITIONS [328 m]; PARTITIONS [1854 h]; Cost |  |  | T17P209203C0 | PT | C | 17 | P2 | PT | 092 | 03 |  | BILL 10 | B10 | S2 | 2F | R00 | ACF06 | GP | 092 | 314 | 945 |  |  | P1F |  |
| T17P222015C0 |  | PT-17 ; 2nd Fix, Medical Gas pipe (PAT RM-2) | 42d | 2012-02-13 | 2012-04-02 | T17P209201C0, T17P222007C0 SS |  |  |  |  | 37.9d | 0d | PLUMBING [1149.6 h]; Cost |  |  | T17P222015C0 | PT | C | 17 | P2 | ME | 220 | 15 | 2n | BILL 10 | B10 | S2 | 2F | R00 | ACF07 | MEP | 220 |  |  |  |  |  |  |
| T17P221117C0 |  | PT-17 ; 1st Fix, Inst of Sprinkler branch pipe (PAT RM-2) | 48d | 2012-02-23 | 2012-04-19 | T17P209201C0, T17P221111C0, T17P205503C0 FF+18d |  |  |  |  | 106.65d | 75d | MECHANICAL [561.6 h]; Cost |  |  | T17P221117C0 | PT | C | 17 | P2 | ME | 211 | 17 | 1S | BILL 10 | B10 | S2 | 1F | R00 | ACF04 | MEP | 211 |  |  |  |  | M1F |  |
| T17P201005C0 |  | PT-17 ; 2nd, Wall Inspection by Consultant (PAT RM-2) | 5.88d | 2012-04-02 | 2012-04-09 | T17P222011C0, T17P222015C0, T17P226009C0 |  |  |  |  | 37.9d | 0d | Labor General [0.6 h]; Cost |  |  | T17P201005C0 | PT | C | 17 | P2 | ME | 010 | 05 | 2n | BILL 10 | B10 | S2 | WI | R00 | ACF07 | MEP | 010 |  |  |  |  |  |  |
| T17P223009C0 |  | PT-17 ; 2nd Fix, Inst of VAV'S CHW connection (PAT RM-2) | 42d | 2012-04-02 | 2012-05-21 | T17P223017C0 |  |  |  |  | 31.65d | 0d | MECHANICAL [1450.8 h]; Cost |  |  | T17P223009C0 | PT | C | 17 | P2 | ME | 230 | 09 | 2n | BILL 10 | B10 | S2 | 2F | R00 | ACF07 | MEP | 230 |  |  |  |  |  |  |
| T17P209205C0 |  | PT-17 ; Partitions Closing (PAT RM-2) | 47.88d | 2012-04-09 | 2012-06-04 | T17P201005C0, T17P205511C0, T17P209203C0, T17P222005C0, T17P222019C0, TAFOA09214C1 FF, T17P209702C0 FF, T17P208103C0 FF |  |  |  |  | 37.9d | 0d | PARTITIONS [328 m]; PARTITIONS [2369 h]; Cost |  |  | T17P209205C0 | PT | C | 17 | P2 | PT | 092 | 05 |  | BILL 10 | B10 | S2 | FF | R00 | ACF06 | GP | 092 | 315 | 946 |  |  | P2F |  |
| T17P223008C0 |  | PT-17 ; 1st Fix, Inst of VCD's/FD's (PAT RM-2) | 48d | 2012-04-21 | 2012-06-17 | T17P223023C0, T17P205503C0 FF+18d |  |  |  |  | 57.65d | 26d | MECHANICAL [1753.2 h]; Cost |  |  | T17P223008C0 | PT | C | 17 | P2 | ME | 230 | 08 | 1S | BILL 10 | B10 | S2 | 1F | R00 | ACF04 | MEP | 230 |  |  |  |  | M1F |  |
| T17P223015C0 |  | PT-17 ; 2nd Fix, Insulation of CHW pipe & Duct (PAT RM-2) | 48d | 2012-05-21 | 2012-07-17 | T17P223009C0, T17P223017C0, T17P223023C0 |  |  |  |  | 31.65d | 0d | MECHANICAL [3064.8 h]; Cost |  |  | T17P223015C0 | PT | C | 17 | P2 | ME | 230 | 15 | 2n | BILL 10 | B10 | S2 | 2F | R00 | ACF07 | MEP | 230 |  |  |  |  |  |  |
| T17P207103C0 |  | PT-17 ; Waterproofing (PAT RM-2) | 11.88d | 2012-06-04 | 2012-06-19 | T17P208103C0, T17P209205C0 |  |  |  |  | 92.78d | 48.38d | THERMAL & MOISTURE [384 h]; THERMAL & MOISTURE [2509 m2]; Cost |  |  | T17P207103C0 | PT | C | 17 | P2 | FF | 071 | 03 |  | BILL 10 | B10 | S2 | 01 | R00 | ACF03 |  | 071 | 105 | 999 |  |  |  |  |
| T17P209901C0 |  | PT-17 ; Wall Prime & 1st coat (PAT RM-2) | 30d | 2012-06-04 | 2012-07-10 | T17P209205C0 |  |  |  |  | 37.9d | 0d | WALL PAINT [415 h]; WALL PAINT [517 m2]; Cost |  |  | T17P209901C0 | PT | C | 17 | P2 | PA | 099 | 01 |  | BILL 10 | B10 | S2 | 01 | R00 | ACF06 |  | 099 | 328 | 956 |  |  |  |  |
| T17P226005C0 |  | PT-17 ; 2nd Fix, Wiring for Power/Lighting/Emergency (PAT RM-2) | 42d | 2012-06-04 | 2012-07-24 | T17P209205C0 |  |  |  |  | 97.9d | 0d | ELECTRICAL [392.4 h]; Cost |  |  | T17P226005C0 | PT | C | 17 | P2 | ME | 260 | 05 | 2n | BILL 10 | B10 | S2 | 2F | R00 | ACF07 | MEP | 260 |  |  |  |  |  |  |
| T17P226007C0 |  | PT-17 ; 2nd Fix, Cable Pulling (PAT RM-2) | 48d | 2012-06-04 | 2012-07-31 | T17P209201C0 SS+6d, T17P209205C0 |  |  |  |  | 133.9d | 102.25d | ELECTRICAL [2683.2 h]; Cost |  |  | T17P226007C0 | PT | C | 17 | P2 | ME | 260 | 07 | 2n | BILL 10 | B10 | S2 | 2F | R00 | ACF07 | MEP | 260 |  |  |  |  |  |  |
| T17P226011C0 |  | PT-17 ; 2nd Fix, Inst of Equipment (DB) (PAT RM-2) | 54d | 2012-06-04 | 2012-08-07 | T17P209205C0 |  |  |  |  | 116.65d | 72.25d | ELECTRICAL [878.4 h]; Cost |  |  | T17P226011C0 | PT | C | 17 | P2 | ME | 260 | 11 | 2n | BILL 10 | B10 | S2 | 2F | R00 | ACF04 | MEP | 260 |  |  |  |  |  | E |
| T17P226053C0 |  | PT-17 ; 2nd Fix, Wiring / Cabling (PAT RM-2) | 42d | 2012-06-04 | 2012-07-24 | T17P209203C0, T17P209205C0 |  |  |  |  | 49.9d | 18.25d | ELECTRICAL [392.4 h]; Cost |  |  | T17P226053C0 | PT | C | 17 | P2 | ME | 260 | 53 | 2n | BILL 10 | B10 | S2 | 2F | R00 | ACF07 | MEP | 260 | 389 | 977 |  |  |  |  |
| T17P205501C0 |  | PT-17 ; Handrails & balustrade (PAT RM-2) | 34.75d | 2012-07-10 | 2012-08-22 | T17P209901C0 |  |  |  |  | 65.15d | 25.5d | SECONDARY STEEL [174 h]; Cost |  |  | T17P205501C0 | PT | C | 17 | P2 | SW | 055 | 01 |  | BILL 10 | B10 | S2 | 01 | R00 | ACF03 |  | a |  |  |  |  |  |  |
| T17P209501C0 |  | PT-17 ; Ceiling Grid and Service Tile (PAT RM-2) | 24d | 2012-07-17 | 2012-08-14 | T17P205503C0, T17P209205C0 SS+15d, T17P221117C0, T17P223008C0, T17P223009C0, T17P223015C0, T17P227001C0, T17P226053C0 FF, T17P209901C0 |  |  |  |  | 31.65d | 0d | CEILING GRID FOR GYPSUM [3691.46 h]; CEILING GRID FOR GYPSUM [315.76 m2]; Cost |  |  | T17P209501C0 | PT | C | 17 | P2 | CE | 095 | 01 |  | BILL 10 | B10 | S2 | 01 | R00 | ACF06 |  | 095 | 323 | 952 |  |  |  |  |
| T17P209510C0 |  | PT-17 ; Patient Lift Ceiling Rail (by others) (PAT RM-2) | 30d | 2012-07-17 | 2012-08-23 | T17P209501C0 SS |  |  |  |  | 115.65d | 84d | Labor General [0.1 h]; Cost |  |  | I06P109501C0 | PT | C | 17 | P2 | CE | 095 | 10 |  | BILL 10 | B10 | S2 | 02 | R00 | ACF06 |  | 095 | 323 | 952 |  |  |  |  |
| T17P226015C0 |  | PT-17 ; Final Fix, Termination & Gladding of Cables (PAT RM-2) | 36d | 2012-07-24 | 2012-09-06 | T17P226005C0 |  |  |  |  | 97.9d | 66.25d | ELECTRICAL [148.8 h]; Cost |  |  | T17P226015C0 | PT | C | 17 | P2 | ME | 260 | 15 | FF | BILL 10 | B10 | S2 | FF | R00 | ACF07 | MEP | 260 |  |  |  |  |  |  |
| T17P209305C0 |  | PT-17 ; Flooring (Terrazzo) (PAT RM-2) | 30d | 2012-08-14 | 2012-09-20 | T17P207103C0, T17P209501C0 |  |  |  |  | 44.4d | 0d | TERRAZO FLOOR [1073 m2]; TERRAZO FLOOR [1936 h]; Cost |  |  | T17P209305C0 | PT | C | 17 | P2 | FF | 096 | 05 |  | BILL 10 | B10 | S2 | 07 | R00 | ACF06 |  | TZ | 106 | 1000 |  |  |  |  |
| T17P209601C0 |  | PT-17 ; Flooring (Rubber & etc) (PAT RM-2) | 30d | 2012-08-14 | 2012-09-20 | T17P209501C0, T17P205501C0 FF |  |  |  |  | 39.65d | 0d | RUBBER FLOOR [32 h]; RUBBER FLOOR [77 m2]; Cost |  |  | T17P209601C0 | PT | C | 17 | P2 | FF | 096 | 01 |  | BILL 10 | B10 | S2 | 03 | R00 | ACF06 |  | RF | 326 | 955 |  |  |  |  |
| T17P209905C0 |  | PT-17 ; Ceiling Prime & 1st coat (PAT RM-2) | 30d | 2012-08-14 | 2012-09-20 | T17P209501C0 |  |  |  |  | 110.4d | 0d | CEILING PAINT [28 h]; CEILING PAINT [33 m2]; Cost |  |  | T17P209905C0 | PT | C | 17 | P2 | PA | 099 | 05 |  | BILL 10 | B10 | S2 | 01 | R00 | ACF06 |  | 099 | 330 | 958 |  |  |  |  |
| T17P221115C0 |  | PT-17 ; 2nd Fix, Inst of Sprinkler droppers (PAT RM-2) | 42d | 2012-08-14 | 2012-10-04 | T17P209501C0 |  |  |  |  | 37.65d | 0d | MECHANICAL [1602 h]; Cost |  |  | T17P221115C0 | PT | C | 17 | P2 | ME | 211 | 15 | 2n | BILL 10 | B10 | S2 | 2F | R00 | ACF07 | MEP | 211 |  |  |  |  |  |  |
| T17P223021C0 |  | PT-17 ; 2nd Fix, Inst of Flexible Duct & Plenum boxes (PAT RM-2) | 42d | 2012-08-14 | 2012-10-04 | T17P209205C0, T17P209501C0 |  |  |  |  | 37.65d | 0d | MECHANICAL [30 h]; Cost |  |  | T17P223021C0 | PT | C | 17 | P2 | ME | 230 | 21 | 2n | BILL 10 | B10 | S2 | 2F | R00 | ACF07 | MEP | 230 |  |  |  |  |  |  |
| T17P226017C0 |  | PT-17 ; Final Fix, Inst of Ceiling rose (PAT RM-2) | 36d | 2012-08-14 | 2012-09-27 | T17P209501C0 |  |  |  |  | 31.65d | 0d | ELECTRICAL [61.2 h]; Cost |  |  | T17P226017C0 | PT | C | 17 | P2 | ME | 260 | 17 | FF | BILL 10 | B10 | S2 | FF | R00 | ACF07 | MEP | 260 |  |  |  |  |  |  |
| T17P227002C0 |  | PT-17 ; 2nd Fix, Wiring Droppers (PAT RM-2) | 42d | 2012-08-14 | 2012-10-04 | T17P209501C0 |  |  |  |  | 31.65d | 0d | ELECTRICAL [392.4 h]; Cost |  |  | T17P227002C0 | PT | C | 17 | P2 | ME | 270 | 02 | 2n | BILL 10 | B10 | S2 | 2F | R00 | ACF07 | MEP | 270 |  |  |  |  |  |  |
| T17P227020C0 |  | PT-17 ; 2nd Fix, Inst of ELV Equipment (Panels) (PAT RM-2) | 66d | 2012-08-14 | 2012-11-04 | T17P209205C0, T17P209501C0 |  |  |  |  | 44.4d | 0d | ELECTRICAL [1819.2 h]; Cost |  |  | T17P227020C0 | PT | C | 17 | P2 | ME | 270 | 20 | 2n | BILL 10 | B10 | S2 | 2F | R00 | ACF04 | MEP | 270 |  |  |  |  |  | E |
| T17P240303C0 |  | PT-17 ; Final Fix, Pneumatic Station (PAT RM-2) | 36d | 2012-08-14 | 2012-09-27 | T17P209501C0 |  |  |  |  | 122.4d | 90.75d | MECHANICAL [2974.8 h]; Cost |  |  | T17P240303C0 | PT | C | 17 | P2 | ME | 403 | 03 | FF | BILL 10 | B10 | S2 | FF | R00 | ACF07 | MEP | 403 |  |  |  |  |  |  |
| T17P206101C0 |  | PT-17 ; Wood / caseworks (PAT RM-2) | 48d | 2012-09-20 | 2012-11-19 | T17CO04407C0, T17P209501C0, T17P209601C0, T17P209901C0, TAFWA00101M0 |  |  |  |  | 43.65d | 0d | WOOD WORK/CASEWORK [659.26 no]; WOOD WORK/CASEWORK [1445 h]; Cost |  |  | T17P206101C0 | PT | C | 17 | P2 | WO | 061 | 01 |  | BILL 10 | B10 | S2 | WW | R00 | ACF06 |  | 061 | 332 | 960 |  |  |  |  |
| T17P206102C0 |  | PT-17 ; Head/Foot Wall (PAT RM-2) | 54d | 2012-09-20 | 2012-11-26 | T17CO04407C0, T17P209501C0, TAFWA00101M0, T17P206101C0 SS |  |  |  |  | 56.4d | 0d | WOOD WORK/CASEWORK [1649 h]; Cost |  |  | T17P206102C0 | PT | C | 17 | P2 | WO | 061 | 02 |  | BILL 10 | B10 | S2 | WW | R00 | ACF06 |  | 061 | 332 | 960 |  |  |  |  |
| T17P208107C0 |  | PT-17 ; Doors (PAT RM-2) | 36d | 2012-09-20 | 2012-11-04 | T17P208103C0, T17P209501C0, T17P209601C0, T17P209901C0 |  |  |  |  | 77.9d | 0d | ASSORTED DOORS [430 h]; ASSORTED DOORS [43 no]; Cost |  |  | T17P208107C0 | PT | C | 17 | P2 | DO | 081 | 07 |  | BILL 10 | B10 | S2 | DR | R00 | ACF06 |  | 081 | 317 | 948 | 08 |  |  |  |
| T17P209903C0 |  | PT-17 ; Wall Final Paint (PAT RM-2) | 30d | 2012-09-20 | 2012-10-25 | T17P209901C0, T17P209905C0, T17P209501C0 |  |  |  |  | 110.4d | 72d | WALL PAINT [225 h]; WALL PAINT [279 m2]; Cost |  |  | T17P209903C0 | PT | C | 17 | P2 | PA | 099 | 03 |  | BILL 10 | B10 | S2 | 02 | R00 | ACF06 |  | 099 | 329 | 957 |  |  |  |  |
| T17P211071C0 |  | PT-17 ; Food Service Equipment (PAT RM-2) | 52d | 2012-09-20 | 2012-11-24 | T17P209601C0 |  |  |  |  | 39.65d | 8d | FF&E [2805 h]; Cost |  |  | T17P211071C0 | PT | C | 17 | P2 | EQ | 110 | 71 |  | BILL 10 | B10 | S2 | 06 | R00 | ACF08 | FK | KE | 313 | 944 |  |  |  |  |

| ID | WBS | Activity | Duration | Start | Finish | Predecessors | Total float | Free float | Resources | change id | CCAD BUILDING(SET) | CCAD PHASE(SET) | CCAD FLOOR(SET) | CCAD ZONE(SET) | CCAD WORK(SET) | CCAD SECTION(SET) | CCAD SERIAL No.(SET) | CCAD SUB ZONE MEP(SET) | CCAD CBS(SET) | CCAD BILL(SET) | CCAD HANDOVER(SET) | CCAD TAG(SET) | CCAD REV(SET) | CCADACF (SET) | CCAD CSA | CCAD SSCF | Change Order # | NEW ACTIVITY ID | CCAD DIVISION(SET) | U% | Act Selector % | CCAD MEQ | IDDD |
| --- | --- | --- | --- | --- | --- | --- | --- | --- | --- | --- | --- | --- | --- | --- | --- | --- | --- | --- | --- | --- | --- | --- | --- | --- | --- | --- | --- | --- | --- | --- | --- | --- | --- |
| T17P222025C0 |  | PT-17 ; Final Fix, Inst of Sanitary Ware (PAT RM-2) | 42d | 2012-09-20 | 2012-11-11 | T17P209205C0, T17P209305C0 | 44.4d | 0d | PLUMBING [3361.2 h]; Cost | T17P222025C0 | PT | C | 17 | P2 | ME | 220 | 25 | FF | BILL 10 | B10 | S2 | FF | R00 | ACF07 | MEP | 220 |  |  |  |  |  |  |  |
| T17P226003C0 |  | PT-17 ; Final Fix, Inst of Light fittings (PAT RM-2) | 48d | 2012-09-27 | 2012-11-26 | T17P209501C0, T17P226017C0 | 31.65d | 0d | ELECTRICAL [7815.6 h]; Cost | T17P226003C0 | PT | C | 17 | P2 | ME | 260 | 03 | FF | BILL 10 | B10 | S2 | FF | R00 | ACF07 | MEP | 260 |  |  |  |  |  |  |  |
| T17P221113C0 |  | PT-17 ; Final Fix, Inst of Sprinklers head/ Extinguisher (PAT RM-2) | 36d | 2012-10-04 | 2012-11-19 | T17P209501C0, T17P221115C0 | 37.65d | 6d | MECHANICAL [234 h]; Cost | T17P221113C0 | PT | C | 17 | P2 | ME | 211 | 13 | FF | BILL 10 | B10 | S2 | FF | R00 | ACF07 | MEP | 211 |  |  |  |  |  |  |  |
| T17P223019C0 |  | PT-17 ; Final Fix, Inst of Grilles & Diffusers (PAT RM-2) | 36d | 2012-10-04 | 2012-11-19 | T17P209501C0, T17P223021C0 | 37.65d | 6d | MECHANICAL [1498.8 h]; Cost | T17P223019C0 | PT | C | 17 | P2 | ME | 230 | 19 | FF | BILL 10 | B10 | S2 | FF | R00 | ACF07 | MEP | 230 |  |  |  |  |  |  |  |
| T17P227030C0 |  | PT-17 ; Final Fix, Inst of ELV device (Detector/Speaker) (PAT RM-2) | 42d | 2012-10-04 | 2012-11-26 | T17P209501C0, T17P227002C0 | 31.65d | 0d | ELECTRICAL [3571.2 h]; Cost | T17P227030C0 | PT | C | 17 | P2 | ME | 270 | 30 | FF | BILL 10 | B10 | S2 | FF | R00 | ACF07 | MEP | 270 |  |  |  |  |  |  |  |
| T17P208709C0 |  | PT-17 ; Ironmongery (PAT RM-2) | 26.5d | 2012-11-04 | 2012-12-08 | T17P208107C0 | 77.9d | 46.25d | IRONMONGERY [610 h]; IRONMONGERY [61 no]; Cost | T17P208709C0 | PT | C | 17 | P2 | DO | 087 | 09 |  | BILL 10 | B10 | S2 | IM | R00 | ACF06 |  | 087 | 322 | 951 | 08 |  |  |  |  |
| T17P209701C0 |  | PT-17 ; Wall finishes (ST, WD, WC) (PAT RM-2) | 36d | 2012-11-04 | 2012-12-18 | T17P226011C0, T17P227020C0, T17P209501C0, T17P209601C0, T17P209305C0 | 44.4d | 0d | ASSORTED WALL FINISH [369 h]; ASSORTED WALL FINISH [423 m2]; Cost | T17P209701C0 | PT | C | 17 | P2 | WF | 097 | 01 |  | BILL 10 | B10 | S2 | 01 | R00 | ACF06 |  | 097 | 105 | 1002 |  |  |  |  |  |
| T17P222021C0 |  | PT-17 ; Final Fix, Terminate Sanitary Ware & Appliances (PAT RM-2) | 42d | 2012-11-11 | 2013-01-02 | T17P222011C0, T17P222025C0 | 44.4d | 12.75d | PLUMBING [3361.2 h]; Cost | T17P222021C0 | PT | C | 17 | P2 | ME | 220 | 21 | FF | BILL 10 | B10 | S2 | FF | R00 | ACF07 | MEP | 220 |  |  |  |  |  |  |  |
| T17P201006C0 |  | PT-17 ; 2nd, Ceiling Inspection by Consultants (PAT RM-2) | 6d | 2012-11-26 | 2012-12-04 | T17P221115C0, T17P223009C0, T17P223015C0, T17P227002C0, T17P209501C0, T17P221113C0, T17P223019C0, T17P226015C0, T17P226017C0, T17P226003C0, T17P227030C0 | 31.65d | 0d | Labor General [0.6 h]; Cost | T17P201006C0 | PT | C | 17 | P2 | ME | 010 | 06 | 2n | BILL 10 | B10 | S2 | CI | R00 | ACF07 | MEP | 010 |  |  |  |  |  |  |  |
| T17P222029C0 |  | PT-17 ; Final Fix, Medical Gas pipe (PAT RM-2) | 18d | 2012-11-26 | 2012-12-18 | T17P209501C0, T17P206102C0 | 56.4d | 24.75d | PLUMBING [1149.6 h]; Cost | T17P222029C0 | PT | C | 17 | P2 | ME | 220 | 29 | FF | BILL 10 | B10 | S2 | FF | R00 | ACF07 | MEP | 220 |  |  |  |  |  |  |  |
| T17P209503C0 |  | PT-17 ; Ceiling closure - ACT/Gypsum (PAT RM-2) | 18.75d | 2012-12-04 | 2012-12-26 | T17P201006C0, T17P209510C0, T17P221115C0, T17P226005C0, T17P227001C0, T17P227002C0, TAFOA09513C1 FF, T17P206101C0, T17P223021C0, T17P226007C0, T17P211071C0 | 31.65d | 0d | ASSORTED CEILING FINISH [416.36 h]; CEILING GYPSUM [103.53 h]; ASSORTED CEILING FINISH [677 m2]; CEILING GYPSUM [316 m2]; Cost | T17P209503C0 | PT | C | 17 | P2 | CE | 095 | 03 |  | BILL 10 | B10 | S2 | 02 | R00 | ACF06 |  | 095 | 324 | 953 |  |  |  |  |  |
| T17P211001C0 |  | PT-17 ; Wall Protection (WP, CG, WG, FCG) (PAT RM-2) | 24d | 2012-12-18 | 2013-01-16 | T17P209701C0, T17P209903C0 SS | 44.4d | 12.75d | FF&E [18 h]; Cost | T17P211001C0 | PT | C | 17 | P2 | WF | 110 | 01 |  | BILL 10 | B10 | S2 | 03 | R00 | ACF08 |  | b | 326 | 1001 |  |  |  |  |  |
| T17P209687C1 |  | PT-17, Carpet Tile Finish (Patient Room-2) | 0d | 2012-12-26 | 2012-12-26 | T17P209903C0 SS, T17P209907C0 SS | 61.65d | 30d | Cost |  | PT | C | 17 | P2 | FF | 096 |  |  |  | B10 |  |  | R00 | ACF06 | CPT | CPT |  |  |  |  |  |  |  |
| T17P209907C0 |  | PT-17 ; Ceiling Final paint (PAT RM-2) | 18d | 2012-12-26 | 2013-01-17 | T17P209601C0, T17P209905C0, T17P209503C0 | 43.65d | 0d | CEILING PAINT [15 h]; CEILING PAINT [18 m2]; Cost | T17P209907C0 | PT | C | 17 | P2 | PA | 099 | 07 |  | BILL 10 | B10 | S2 | 02 | R00 | ACF06 |  | 099 | 331 | 959 |  |  |  |  |  |
| T17P211003C0 |  | PT-17 ; FF & E (PAT RM-2) | 18d | 2012-12-26 | 2013-01-17 | T17P209601C0, T17P206101C0, T17P209503C0 | 43.65d | 12d | FF&E [715 h]; Cost | T17P211003C0 | PT | C | 17 | P2 | WO | 110 | 03 |  | BILL 10 | B10 | S2 | 04 | R00 | ACF08 |  | a | 333 | 961 |  |  |  |  |  |
| T17P222027C0 |  | PT-17 ; Final Fix, Inst of All drain (PAT RM-2) | 18d | 2012-12-26 | 2013-01-17 | T17P209305C0, T17P209503C0 | 31.65d | 0d | PLUMBING [1378.8 h]; Cost | T17P222027C0 | PT | C | 17 | P2 | ME | 220 | 27 | FF | BILL 10 | B10 | S2 | FF | R00 | ACF07 | MEP | 220 |  |  |  | 0 |  |  |  |
| T17P226019C0 |  | PT-17 ; Final Fix, Inst of Switch/Sockets (PAT RM-2) | 18d | 2012-12-26 | 2013-01-17 | T17P209901C0, T17P209503C0 | 31.65d | 0d | ELECTRICAL [362.4 h]; Cost | T17P226019C0 | PT | C | 17 | P2 | ME | 260 | 19 | FF | BILL 10 | B10 | S2 | FF | R00 | ACF07 | MEP | 260 |  |  |  |  |  |  |  |
|  | 10 | **Precommissioning Tesing & snagging (PAT RM-2)** |  | 2013-01-17 | 2013-03-03 |  |  |  |  |  |  |  |  |  |  |  |  |  |  |  |  |  |  |  |  |  |  |  |  |  |  |  |  |
| T17TS01801C0 |  | PT-17 ; MEP de-snag, FIREM sign-off | 12d | 2013-01-17 | 2013-02-02 | T17P222025C0, T17P222027C0, T17P226015C0, T17P222021C0, T17P221113C0, T17P223019C0, T17P240303C0, T17P222029C0, T17P226017C0, T17P226003C0, T17P227030C0, T17P226019C0 | 31.65d | 0d | TESTING & COMMISSIONING [2040 h]; Cost | T17TS01801C0 | PT | C | 17 | TS | SC | 018 | 01 |  | BILL 10 | B10 | S2 | 01 | R00 | ACF07 |  | 018 |  |  |  |  |  |  |  |
| T17TS01804C0 |  | PT-17 ; Touch-up & Clean / JV inspection /CIR /De-snag | 18d | 2013-02-02 | 2013-02-23 | T17P205501C0, T17P206101C0, T17P206102C0, T17P208709C0, T17P209305C0, T17P209601C0, T17P209701C0, T17P209903C0, T17P209907C0, T17P211001C0, T17P211003C0, T17P211071C0, T17TS01801C0, T17P209503C0, T17P109677C1, T17P209687C1 | 31.65d | 0d | TESTING & COMMISSIONING [128 h]; Cost | T17TS01802C0 | PT | C | 17 | TS | SC | 018 | 02 |  | BILL 10 | B10 | S2 | 02 | R00 | ACF07 |  | 018 |  |  |  |  |  |  |  |
| T17TS01805C0 |  | PT-17 ; Consultant's final de-snag inspection | 7d | 2013-02-23 | 2013-03-03 | T17TS01804C0 | 31.65d | 9.35d | Labor General [0.5 h]; Cost | T17TS01803C0 | PT | C | 17 | TS | SC | 018 | 03 |  | BILL 10 | B10 | S2 | 03 | R00 | ACF07 |  | 018 |  |  |  |  |  |  |  |
|  | 05 | **TR Room** |  | 2011-10-22 | 2012-12-09 |  |  |  |  |  |  |  |  |  |  |  |  |  |  |  |  |  |  |  |  |  |  |  |  |  |  |  |  |
| T17TR09201C0 |  | PT-17 ; Metal Studs (TR RM) | 18d | 2011-10-22 | 2011-11-14 | T17PA09201C0 SS | 139.75d | 0d | PARTITIONS [231 h]; PARTITIONS - Metal Studs [32 m]; Cost | T17TR09201C0 | PT | C | 17 | TR | PT | 092 | 01 |  | BILL 10 | B10 | S2 | 1F | R00 | ACF06 | GP | 092 | 313 | 885 |  |  | PMS |  |  |
| T17TR09203C0 |  | PT-17 ; Partitions 1st face (TR RM) | 24d | 2011-11-15 | 2011-12-14 | T17TR09201C0 | 157.75d | 86.2d | PARTITIONS [32 m]; PARTITIONS [177 h]; Cost | T17TR09203C0 | PT | C | 17 | TR | PT | 092 | 03 |  | BILL 10 | B10 | S2 | 2F | R00 | ACF06 | GP | 092 | 314 | 886 |  |  | P1F |  |  |
| T17TR26026C0 |  | PT-17 ; 2nd Fix, Conduit (TR RM) | 30d | 2011-11-15 | 2011-12-21 | T17TR09201C0 | 139.75d | 0d | ELECTRICAL [734.4 h]; Cost | T17TR26026C0 | PT | C | 17 | TR | ME | 260 | 26 | 2n | BILL 10 | B10 | S2 | 2F | R00 | ACF07 | MEP | 260 |  |  |  |  |  |  |  |
| T17TR01005C0 |  | PT-17 ; 2nd, Wall Inspection by Consultant (TR RM) | 12d | 2011-12-22 | 2012-01-05 | T17TR26026C0 | 139.75d | 68.2d | Labor General [0.6 h]; Cost | T17TR01005C0 | PT | C | 17 | TR | ME | 010 | 05 | 2n | BILL 10 | B10 | S2 | WI | R00 | ACF07 | MEP | 010 |  |  |  |  |  |  |  |
| T17TR08101C0 |  | PT-17 ; Door Frames (TR RM) | 18d | 2011-12-28 | 2012-01-18 | T17TR09201C0, GNHE08101C0 FS+126d | 158.75d | 87.2d | ASSORTED DOORS [19 h]; Cost | T17TR08101C0 | PT | C | 17 | TR | DO | 081 | 01 |  | BILL 10 | B10 | S2 | DF | R00 | ACF06 |  | 081 | 316 | 20001090 | 08 |  |  |  |  |
| T17TR09205C0 |  | PT-17 ; Partitions Closing (TR RM) | 30d | 2012-03-27 | 2012-05-01 | T17TR01005C0, T17TR09201C0, T17TR09203C0, TAFOA09214C1 FF, T17TR08101C0 FF, T17PA09205C0 SS | 71.55d | 0d | PARTITIONS [32 m]; PARTITIONS [235 h]; Cost | T17TR09205C0 | PT | C | 17 | TR | PT | 092 | 05 |  | BILL 10 | B10 | S2 | FF | R00 | ACF06 | GP | 092 | 315 | 887 |  |  | P2F |  |  |
| T17TR09901C0 |  | PT-17 ; Wall Prime & 1st coat (TR RM) | 18d | 2012-05-01 | 2012-05-22 | T17TR09205C0 | 71.55d | 0d | WALL PAINT [37 h]; WALL PAINT [45 m2]; Cost | T17TR09901C0 | PT | C | 17 | TR | PA | 099 | 01 |  | BILL 10 | B10 | S2 | 01 | R00 | ACF06 |  | 099 | 360 | 20001110 |  |  |  |  |  |
| T17TR23009C0 |  | PT-17 ; 2nd Fix, Inst of VAV'S CHW connection (TR RM) | 36d | 2012-05-01 | 2012-06-12 | T17TR09205C0 | 83.55d | 0d | MECHANICAL [1450.8 h]; Cost | T17TR23009C0 | PT | C | 17 | TR | ME | 230 | 09 | 2n | BILL 10 | B10 | S2 | 2F | R00 | ACF07 | MEP | 230 |  |  |  |  |  |  |  |
| T17TR23011C0 |  | PT-17 ; 2nd Fix, Inst of VCD's/FD's (TR RM) | 36d | 2012-05-01 | 2012-06-12 | T17TR09205C0 | 83.55d | 0d | MECHANICAL [1753.2 h]; Cost | T17TR23011C0 | PT | C | 17 | TR | ME | 230 | 11 | 2n | BILL 10 | B10 | S2 | 2F | R00 | ACF07 | MEP | 230 |  |  |  |  |  |  |  |
| T17TR26007C0 |  | PT-17 ; 2nd Fix, Cable Pulling (TR RM) | 36d | 2012-05-01 | 2012-06-12 | T17TR09203C0, T17TR09205C0 | 131.55d | 48d | ELECTRICAL [2683.2 h]; Cost | T17TR26007C0 | PT | C | 17 | TR | ME | 260 | 07 | 2n | BILL 10 | B10 | S2 | 2F | R00 | ACF07 | MEP | 260 |  |  |  |  |  |  |  |
| T17TR26009C0 |  | PT-17 ; 2nd Fix, Inst of Equipment (DB, TR, SG,BUS) (TR RM) | 54d | 2012-05-01 | 2012-07-04 | T17TR09205C0 | 95.55d | 0d | ELECTRICAL [3943.2 h]; Cost | T17TR26009C0 | PT | C | 17 | TR | ME | 260 | 09 | 2n | BILL 10 | B10 | S2 | 2F | R00 | ACF04 | MEP | 260 |  |  |  |  |  | E |  |
| T17TR26027C0 |  | PT-17 ; 2nd Fix, Wiring / Cabling (TR RM) | 30d | 2012-05-01 | 2012-06-05 | T17TR09203C0, T17TR09205C0 | 149.55d | 78d | ELECTRICAL [392.4 h]; Cost | T17TR26027C0 | PT | C | 17 | TR | ME | 260 | 27 | 2n | BILL 10 | B10 | S2 | 2F | R00 | ACF07 | MEP | 260 | 417 | 1318 |  |  |  |  |  |
| T17TR09501C0 |  | PT-17 ; Ceiling Grid and Service Tile (TR RM) | 24d | 2012-05-22 | 2012-06-20 | T17TR09205C0 SS+15d, T17TR09901C0 | 71.55d | 0d | CEILING GRID FOR GYPSUM [297.07 h]; CEILING GRID FOR GYPSUM [25.26 m2]; Cost | T17TR09501C0 | PT | C | 17 | TR | CE | 095 | 01 |  | BILL 10 | B10 | S2 | 01 | R00 | ACF06 |  | 095 | 336 | 1327 |  |  |  |  | 1 |
| T17TR09903C0 |  | PT-17 ; Wall - Final Paint (TR RM) | 12d | 2012-05-22 | 2012-06-05 | T17TR09901C0 | 193.55d | 122d | WALL PAINT [20 h]; WALL PAINT [24 m2]; Cost | T17TR09903C0 | PT | C | 17 | TR | PA | 099 | 03 |  | BILL 10 | B10 | S2 | 02 | R00 | ACF06 |  | 099 | 361 | 1312 |  |  |  |  |  |
| T17TR23013C0 |  | PT-17 ; 2nd Fix, Insulation of CHW pipe & Duct (TR RM) | 48d | 2012-06-12 | 2012-08-08 | T17TR23009C0, T17TR23011C0 | 83.55d | 0d | MECHANICAL [3064.8 h]; Cost | T17TR23013C0 | PT | C | 17 | TR | ME | 230 | 13 | 2n | BILL 10 | B10 | S2 | 2F | R00 | ACF07 | MEP | 230 |  |  |  |  |  |  |  |
| T17TR09601C0 |  | PT-17 ; Floor Finishes (TR RM) | 18d | 2012-06-20 | 2012-07-11 | T17TR09501C0 | 83.55d | 0d | ASSORTED FLOOR FINISH [1248 h]; ASSORTED FLOOR FINISH [693 m2]; Cost | T17TR09601C0 | PT | C | 17 | TR | FF | 096 | 01 |  | BILL 10 | B10 | S2 | 01 | R00 | ACF06 |  | FF | 359 | 20001120 |  |  |  |  |  |
| T17TR09905C0 |  | PT-17 ; Ceiling Prime & 1st coat (TR RM) | 18d | 2012-06-20 | 2012-07-11 | T17TR09501C0 | 151.55d | 62d | CEILING PAINT [4 h]; CEILING PAINT [3 m2]; Cost | T17TR09905C0 | PT | C | 17 | TR | PA | 099 | 05 |  | BILL 10 | B10 | S2 | 01 | R00 | ACF06 |  | 099 | 362 | 1313 |  |  |  |  |  |
| T17TR23003C0 |  | PT-17 ; Final Fix, Inst of Grilles & Diffusers (TR RM) | 30d | 2012-06-20 | 2012-07-25 | T17TR09501C0 | 107.55d | 36d | MECHANICAL [1498.8 h]; Cost | T17TR23003C0 | PT | C | 17 | TR | ME | 230 | 03 | FF | BILL 10 | B10 | S2 | FF | R00 | ACF07 | MEP | 230 |  |  |  |  |  |  |  |
| T17TR23023C0 |  | PT-17 ; 2nd Fix, Flexible ducts (TR RM) | 30d | 2012-06-20 | 2012-07-25 | T17TR09205C0, T17TR09501C0 | 107.55d | 36d | MECHANICAL [30 h]; Cost | T17TR23023C0 | PT | C | 17 | TR | ME | 230 | 23 | 2n | BILL 10 | B10 | S2 | 2F | R00 | ACF07 | MEP | 230 | 412 | 20001140 |  |  |  |  |  |
| T17TR23074C0 |  | PT-17 ; Final Fix, Grilles, panels & diffusers (TR RM) | 30d | 2012-06-20 | 2012-07-25 | T17TR09501C0 | 107.55d | 36d | MECHANICAL [1498.8 h]; Cost | T17TR23074C0 | PT | C | 17 | TR | ME | 230 | 74 | FF | BILL 10 | B10 | S2 | FF | R00 | ACF07 | MEP | 230 | 419 | 20001160 |  |  |  |  |  |
| T17TR26005C0 |  | PT-17 ; 2nd Fix, Wiring for Power/Lighting/Emergency (TR RM) | 30d | 2012-06-20 | 2012-07-25 | T17TR26026C0, T17TR09501C0 | 107.55d | 36d | ELECTRICAL [392.4 h]; Cost | T17TR26005C0 | PT | C | 17 | TR | ME | 260 | 05 | 2n | BILL 10 | B10 | S2 | 2F | R00 | ACF07 | MEP | 260 |  |  |  |  |  |  |  |
| T17TR26015C0 |  | PT-17 ; Final Fix, Inst of Ceiling rose (TR RM) | 30d | 2012-06-20 | 2012-07-25 | T17TR09501C0 | 107.55d | 36d | ELECTRICAL [61.2 h]; Cost | T17TR26015C0 | PT | C | 17 | TR | ME | 260 | 15 | FF | BILL 10 | B10 | S2 | FF | R00 | ACF07 | MEP | 260 |  |  |  |  |  |  |  |
| T17TR26019C0 |  | PT-17 ; Final Fix, Inst of Light fittings (TR RM) | 36d | 2012-06-20 | 2012-08-01 | T17TR09501C0 | 101.55d | 30d | ELECTRICAL [7815.6 h]; Cost | T17TR26019C0 | PT | C | 17 | TR | ME | 260 | 19 | FF | BILL 10 | B10 | S2 | FF | R00 | ACF07 | MEP | 260 |  |  |  |  |  |  |  |
| T17TR26076C0 |  | PT-17 ; Final Fix, Lighting fittings (TR RM) | 36d | 2012-06-20 | 2012-08-01 | T17TR09501C0 | 101.55d | 30d | ELECTRICAL [7815.6 h]; Cost | T17TR26076C0 | PT | C | 17 | TR | ME | 260 | 76 | FF | BILL 10 | B10 | S2 | FF | R00 | ACF07 | MEP | 260 | 420 | 20001170 |  |  |  |  |  |
| T17TR27002C0 |  | PT-17 ; 2nd Fix, Dressing of ELV panels (TR RM) | 30d | 2012-06-20 | 2012-07-25 | T17TR09205C0, T17TR27020C0 SS | 71.55d | 0d | ELECTRICAL [273.6 h]; Cost | T17TR27002C0 | PT | C | 17 | TR | ME | 270 | 02 | 2n | BILL 10 | B10 | S2 | 2F | R00 | ACF07 | MEP | 270 |  |  |  |  |  |  |  |
| T17TR27020C0 |  | PT-17 ; 2nd Fix, Inst of ELV Equipment (Panels) (TR RM) | 48d | 2012-06-20 | 2012-08-15 | T17TR09205C0, T17TR09501C0 | 71.55d | 0d | ELECTRICAL [1819.2 h]; Cost | T17TR27020C0 | PT | C | 17 | TR | ME | 270 | 20 | 2n | BILL 10 | B10 | S2 | 2F | R00 | ACF04 | MEP | 270 |  |  |  |  |  | E |  |
| T17TR26013C0 |  | PT-17 ; Final Fix, Termination & Gladding of Cables (TR RM) | 30d | 2012-07-04 | 2012-08-08 | T17TR26009C0, T17TR09501C0 | 95.55d | 24d | ELECTRICAL [148.8 h]; Cost | T17TR26013C0 | PT | C | 17 | TR | ME | 260 | 13 | FF | BILL 10 | B10 | S2 | FF | R00 | ACF07 | MEP | 260 |  |  |  |  |  |  |  |
| T17TR08105C0 |  | PT-17 ; Doors (TR RM) | 18d | 2012-07-11 | 2012-08-01 | T17TR08101C0, T17TR09501C0, T17TR09601C0, T17TR09901C0 | 129.55d | 0d | ASSORTED DOORS [40 h]; ASSORTED DOORS [4 no]; Cost | T17TR08105C0 | PT | C | 17 | TR | DO | 081 | 05 |  | BILL 10 | B10 | S2 | DR | R00 | ACF06 |  | 081 | 317 | 1325 | 08 |  |  |  |  |
| T17TR21115C0 |  | PT-17 ; 2nd Fix, Gaseous Fire Suppression (TR RM) | 36d | 2012-07-11 | 2012-08-25 | T17TR09601C0 | 83.55d | 12d | MECHANICAL [2626.8 h]; Cost | T17TR21115C0 | PT | C | 17 | TR | ME | 211 | 15 | 2n | BILL 10 | B10 | S2 | 2F | R00 | ACF07 | MEP | 211 | 411 | 20001130 |  |  |  |  |  |
| T17TR27030C0 |  | PT-17 ; Final Fix, Inst of ELV device (Detector/Speaker) (TR RM) | 36d | 2012-07-25 | 2012-09-08 | T17TR27002C0, T17TR09501C0 | 71.55d | 0d | ELECTRICAL [3571.2 h]; Cost | T17TR27030C0 | PT | C | 17 | TR | ME | 270 | 30 | FF | BILL 10 | B10 | S2 | FF | R00 | ACF07 | MEP | 270 |  |  |  |  |  |  |  |
| T17TR08709C0 |  | PT-17 ; Ironmongery (TR RM) | 16d | 2012-08-01 | 2012-08-22 | T17TR08105C0 | 129.55d | 58d | IRONMONGERY [50 h]; IRONMONGERY [5 no]; Cost | T17TR08709C0 | PT | C | 17 | TR | DO | 087 | 09 |  | BILL 10 | B10 | S2 | IM | R00 | ACF06 |  | 087 | 322 | 20001100 | 08 |  |  |  |  |
| T17TR01006C0 |  | PT-17 ; 2nd, Ceiling Inspection by Consultants (TR RM) | 12d | 2012-08-08 | 2012-08-25 | T17TR23009C0, T17TR23011C0, T17TR23013C0, T17TR26007C0, T17TR09501C0 | 83.55d | 12d | Labor General [0.6 h]; Cost | T17TR01006C0 | PT | C | 17 | TR | ME | 010 | 06 | 2n | BILL 10 | B10 | S2 | CI | R00 | ACF07 | MEP | 010 |  |  |  |  |  |  |  |
| T17TR09503C0 |  | PT-17 ; Ceiling closure (TR RM) | 14d | 2012-09-08 | 2012-09-24 | T17TR01006C0, T17TR09501C0, T17TR21115C0, T17TR26005C0, T17TR26007C0, T17TR26026C0, T17TR26027C0, T17TR23074C0, T17TR23003C0, T17TR26076C0, T17TR26015C0, T17TR26013C0, T17TR26019C0, T17TR27030C0, T17TR23023C0 | 71.55d | 0d | ASSORTED CEILING FINISH [33.21 h]; CEILING GYPSUM [8.2 h]; ASSORTED CEILING FINISH [54 m2]; CEILING GYPSUM [25 m2]; Cost | T17TR09503C0 | PT | C | 17 | TR | CE | 095 | 03 |  | BILL 10 | B10 | S2 | 02 | R00 | ACF06 |  | 095 | 337 | 20001080 |  |  |  |  |  |
| T17TR09907C0 |  | PT-17 ; Ceiling - Final paint (TR RM) | 12d | 2012-09-24 | 2012-10-08 | T17TR09905C0, T17TR09503C0 | 89.55d | 18d | CEILING PAINT [2 h]; CEILING PAINT [1 m2]; Cost | T17TR09907C0 | PT | C | 17 | TR | PA | 099 | 07 |  | BILL 10 | B10 | S2 | 02 | R00 | ACF06 |  | 099 | 363 | 1314 |  |  |  |  |  |
| T17TR26017C0 |  | PT-17 ; Final Fix, Inst of Switch/Sockets (TR RM) | 12d | 2012-09-24 | 2012-10-08 | T17TR09901C0, T17TR09503C0 | 71.55d | 0d | ELECTRICAL [362.4 h]; Cost | T17TR26017C0 | PT | C | 17 | TR | ME | 260 | 17 | FF | BILL 10 | B10 | S2 | FF | R00 | ACF07 | MEP | 260 |  |  |  |  |  |  |  |
| T17TR01802C0 |  | PT-17 ; MEP de-snag, FIREM sign-off | 18d | 2012-10-08 | 2012-10-31 | T17TR26017C0, T17TR23074C0, T17TR23003C0, T17TR26076C0, T17TR26013C0, T17TR26015C0, T17TR26019C0, T17TR27030C0 | 71.55d | 0d | TESTING & COMMISSIONING [510 h]; Cost | S05CO01851C0 | PT | C | 17 | TR | SC | 018 | 53 |  | BILL 10 | B10 | S2 | 01 | R00 | ACF07 |  | 018 |  |  |  |  |  |  |  |
| T17TR01801C0 |  | PT-17 ; Touch-up & Clean / JV inspection /CIR /De-snag | 22.25d | 2012-10-31 | 2012-11-27 | T17TR01802C0, T17TR08709C0, T17TR09601C0, T17TR09903C0, T17TR09907C0, T17TR09503C0 | 71.55d | 0d | TESTING & COMMISSIONING [128 h]; Cost | T17TR01851C0 | PT | C | 17 | TR | SC | 018 | 51 |  | BILL 10 | B10 | S2 | 02 | R00 | ACF07 |  | 018 | 396 |  |  |  |  |  |  |
| T17TR01803C0 |  | PT-17 ; Consultant's final de-snag inspection | 9d | 2012-11-27 | 2012-12-09 | T17TR01801C0 | 71.55d | 46.65d | Labor General [1 h]; Cost | CP3TS01803C0 | PT | C | 17 | TR | SC | 018 | 03 |  | BILL 10 | B10 | S1 | 03 | R00 | ACF07 |  | 018 |  |  |  |  |  |  |  |

| ID | WBS | Activity | Duration | Start | Finish | Predecessors | Total float | Free float | Resources | change id | CCAD BUILDING(SET) | CCAD PHASE(SET) | CCAD FLOOR(SET) | CCAD ZONE(SET) | CCAD WORK(SET) | CCAD SECTION(SET) | CCAD SERIAL No.(SET) | CCAD SUB ZONE MEP(SET) | CCAD CBS(SET) | CCAD BILL(SET) | CCAD HANDOVER(SET) | CCAD TAG(SET) | CCAD REV(SET) | CCADACF (SET) | CCAD CSA | CCAD SSCF | Act Selector % | Change Order # | NEW ACTIVITY ID | R3 Partitions | CCAD DIVISION(SET) | CCAD MEQ | R3 Finish |
| --- | --- | --- | --- | --- | --- | --- | --- | --- | --- | --- | --- | --- | --- | --- | --- | --- | --- | --- | --- | --- | --- | --- | --- | --- | --- | --- | --- | --- | --- | --- | --- | --- | --- |
|  | 04 | **Public Area ( Elev.Lobby & Corridors )** |  | 2011-10-03 | 2013-03-21 |  |  |  |  |  |  |  |  |  |  |  |  |  |  |  |  |  |  |  |  |  |  |  |  |  |  |  |  |
| T17PA23001C0 |  | PT-17 ; 1st Fix, Inst. of Supports for MEP (Public Area) | 36d | 2011-10-03 | 2011-11-17 | T17CO07807C0 | 22.3d | 0d | MECHANICAL [4027.2 h]; Cost | S08PA23001C0 | PT | C | 17 | PA | ME | 230 | 01 | 1S | BILL 10 | B10 | S2 | 1F | R00 | ACF04 | MEP | 230 | M1F |  |  |  |  |  |  |
| T17PA09201C0 |  | PT-17 ; Metal Studs (Public Area) | 30d | 2011-10-22 | 2011-11-29 | T17PA23001C0 SS+12d, TAFCI09201R02 FS+58d, T17PA23001C0 FF | 116.75d | 0d | PARTITIONS [5687 h]; PARTITIONS - Metal Studs [789 m]; Cost | S08PA09201C0 | PT | C | 17 | PA | PT | 092 | 01 |  | BILL 10 | B10 | S2 | 1F | R00 | ACF06 | GP | 092 | PMS | 313 | 944 | R3 |  |  |  |
| T17PA26001C0 |  | PT-17 ; 1st Fix, Inst of Trunking/Conduiting (Public Area) | 60d | 2011-11-17 | 2012-01-30 | T17CO07807C0, T17PA23001C0 | 22.3d | 0d | ELECTRICAL [4268.4 h]; Cost | S08PA26001C0 | PT | C | 17 | PA | ME | 260 | 01 | 1S | BILL 10 | B10 | S2 | 1F | R00 | ACF04 | MEP | 260 | M1F |  |  |  |  |  |  |
| T17PA09203C0 |  | PT-17 ; Partitions early wall & 1st face (Public Area) | 33d | 2011-11-30 | 2012-01-09 | T17PA09201C0 | 131.62d | 65.2d | PARTITIONS [789 m]; PARTITIONS [4449 h]; Cost | S08PA09203C0 | PT | C | 17 | PA | PT | 092 | 03 |  | BILL 10 | B10 | S2 | 2F | R00 | ACF06 | GP | 092 | P1F | 314 | 945 |  |  |  |  |
| T17PA22011C0 |  | PT-17 ; 2nd Fix, Drainage/Water pipe (wall) (Public Area) | 42d | 2011-11-30 | 2012-01-19 | T17PA09201C0 | 116.75d | 11.12d | PLUMBING [1378.8 h]; Cost | S08PA22011C0 | PT | C | 17 | PA | ME | 220 | 11 | 2n | BILL 10 | B10 | S2 | 2F | R00 | ACF07 | MEP | 220 |  |  |  |  |  |  |  |
| T17PA26009C0 |  | PT-17 ; 2nd Fix, Inst of Wall conduites (Public Area) | 42d | 2011-11-30 | 2012-01-19 | T17PA09201C0 | 116.75d | 11.12d | ELECTRICAL [734.4 h]; Cost | S08PA26009C0 | PT | C | 17 | PA | ME | 260 | 09 | 2n | BILL 10 | B10 | S2 | 2F | R00 | ACF07 | MEP | 260 |  |  |  |  |  |  |  |
| T17PA27010C0 |  | PT-17 ; 1st Fix, Inst of Trunking for ELV system (Public Area) | 54d | 2011-12-06 | 2012-02-09 | T17CO07807C0, T17PA23001C0, T17PA26001C0 SS+14d | 22.3d | 0d | ELECTRICAL [3202.8 h]; Cost | S08PA27010C0 | PT | C | 17 | PA | ME | 270 | 10 | 1S | BILL 10 | B10 | S2 | 1F | R00 | ACF04 | MEP | 270 | M1F |  |  |  |  |  |  |
| T17PA26013C0 |  | PT-17 ; 1st Fix, Inst of Cable Tray (Public Area) | 48d | 2011-12-18 | 2012-02-14 | T17CO07807C0, T17PA23001C0, T17PA27010C0 SS+10d | 22.3d | 0d | ELECTRICAL [399.6 h]; Cost | S08PA26013C0 | PT | C | 17 | PA | ME | 260 | 13 | 1S | BILL 10 | B10 | S2 | 1F | R00 | ACF04 | MEP | 260 | M1F |  |  |  |  |  |  |
| T17PA08103C0 |  | PT-17 ; Door Frames (Public Area) | 36d | 2011-12-28 | 2012-02-09 | T17PA09201C0, GNHE08101C0 FS+126d | 105.62d | 0d | ASSORTED DOORS [448 h]; Cost | S08PA08103C0 | PT | C | 17 | PA | DO | 081 | 03 |  | BILL 10 | B10 | S2 | DF | R00 | ACF06 |  | 081 |  | 316 | 947 |  | 08 |  |  |
| T17PA22019C0 |  | PT-17 ; 1st Fix, Inst of Drainage pipe (ceiling) (Public Area) | 54d | 2012-01-04 | 2012-03-08 | T17PA23001C0, T17PA26013C0 SS+14d | 22.3d | 0d | PLUMBING [2326.8 h]; Cost | S08PA22019C0 | PT | C | 17 | PA | ME | 220 | 19 | 1S | BILL 10 | B10 | S2 | 1F | R00 | ACF04 | MEP | 220 | M1F |  |  |  |  |  |  |
| T17PA22005C0 |  | PT-17 ; 1st Fix, Inst of Water supply pipe (ceiling) (Public Area) | 60d | 2012-01-16 | 2012-03-27 | T17PA22019C0 SS+10d, T17PA23001C0 | 22.3d | 0d | PLUMBING [4548 h]; Cost | S08PA22005C0 | PT | C | 17 | PA | ME | 220 | 05 | 1S | BILL 10 | B10 | S2 | 1F | R00 | ACF04 | MEP | 220 | M1F |  |  |  |  |  |  |
| T17PA21111C0 |  | PT-17 ; 1st Fix, Inst of Sprinkler main pipe (Public Area) | 48d | 2012-01-30 | 2012-03-27 | T17PA22005C0 SS+12d, T17PA23001C0 | 22.3d | 0d | MECHANICAL [1236 h]; Cost | S08PA21111C0 | PT | C | 17 | PA | ME | 211 | 11 | 1S | BILL 10 | B10 | S2 | 1F | R00 | ACF04 | MEP | 211 | M1F |  |  |  |  |  |  |
| T17PA01005C0 |  | PT-17 ; 2nd, Wall Inspection by Consultant (Public Area) | 5.88d | 2012-02-02 | 2012-02-09 | T17PA08103C0 FF, T17PA22011C0, T17PA26009C0 | 105.62d | 39.2d | Labor General [0.6 h]; Cost | S08PA01005C0 | PT | C | 17 | PA | ME | 010 | 05 | 2n | BILL 10 | B10 | S2 | WI | R00 | ACF07 | MEP | 010 |  |  |  |  |  |  |  |
| T17PA27001C0 |  | PT-17 ; 1st Fix, Wiring/ Cabling work (Public Area) | 48d | 2012-02-14 | 2012-04-10 | T17PA26001C0, T17PA26013C0, T17PA27010C0 | 120.3d | 98d | ELECTRICAL [392.4 h]; Cost | S08PA27001C0 | PT | C | 17 | PA | ME | 270 | 01 | 1S | BILL 10 | B10 | S2 | 1F | R00 | ACF04 | MEP | 270 | M1F |  |  |  |  |  |  |
| T17PA23017C0 |  | PT-17 ; 1st Fix, Inst of CHW pipe (Public Area) | 54d | 2012-02-16 | 2012-04-19 | T17PA21111C0 SS+14d, T17PA23001C0 | 22.3d | 0d | MECHANICAL [2467.2 h]; Cost | S08PA23017C0 | PT | C | 17 | PA | ME | 230 | 17 | 1S | BILL 10 | B10 | S2 | 1F | R00 | ACF04 | MEP | 230 | M1F |  |  |  |  |  |  |
| T17PA23023C0 |  | PT-17 ; 1st Fix, Inst of Main Ducting (Public Area) | 60d | 2012-02-28 | 2012-05-08 | T17PA23001C0, T17PA23017C0 SS+10d | 48.3d | 0d | MECHANICAL [8022 h]; Cost | S08PA23023C0 | PT | C | 17 | PA | ME | 230 | 23 | 1S | BILL 10 | B10 | S2 | 1F | R00 | ACF04 | MEP | 230 | M1F |  |  |  |  |  |  |
| T17PA09205C0 |  | PT-17 ; Partitions Closing (Public Area) | 35.88d | 2012-03-27 | 2012-05-08 | T17PA01005C0, T17PA09203C0, T17PA22005C0, T17PA22019C0, TAFOA09214C1 FF, TAFCI22001R02 FS+58d, T17PA08103C0 FF | 66.42d | 0d | PARTITIONS [789 m]; PARTITIONS [5697 h]; Cost | S08PA09205C0 | PT | C | 17 | PA | PT | 092 | 05 |  | BILL 10 | B10 | S2 | FF | R00 | ACF06 | GP | 092 | P2F | 315 | 946 | R3 |  |  |  |
| T17PA21117C0 |  | PT-17 ; 1st Fix, Inst of Sprinkler branch pipe (Public Area) | 48d | 2012-03-27 | 2012-05-22 | T17PA09201C0, T17PA21111C0 | 84.3d | 62d | MECHANICAL [561.6 h]; Cost | S08PA21117C0 | PT | C | 17 | PA | ME | 211 | 17 | 1S | BILL 10 | B10 | S2 | 1F | R00 | ACF04 | MEP | 211 | M1F |  |  |  |  |  |  |
| T17PA23009C0 |  | PT-17 ; 2nd Fix, Inst of VAV'S CHW connection (Public Area) | 42d | 2012-04-19 | 2012-06-07 | T17PA23017C0 | 22.3d | 0d | MECHANICAL [1450.8 h]; Cost | S08PA23009C0 | PT | C | 17 | PA | ME | 230 | 09 | 2n | BILL 10 | B10 | S2 | 2F | R00 | ACF07 | MEP | 230 |  |  |  |  |  |  |  |
| T17PA09901C0 |  | PT-17 ; Wall Prime & 1st coat (Public Area) | 30d | 2012-05-08 | 2012-06-12 | T17PA09205C0 | 66.42d | 0d | WALL PAINT [866 h]; WALL PAINT [1080 m2]; Cost | S08PA09901C0 | PT | C | 17 | PA | PA | 099 | 01 |  | BILL 10 | B10 | S2 | 01 | R00 | ACF06 |  | 099 |  | 328 | 956 |  |  |  |  |
| T17PA26005C0 |  | PT-17 ; 2nd Fix, Wiring for Power/Lighting/Emergency (Public Area) | 42d | 2012-05-08 | 2012-06-27 | T17PA09205C0 | 126.42d | 0d | ELECTRICAL [392.4 h]; Cost | S08PA26005C0 | PT | C | 17 | PA | ME | 260 | 05 | 2n | BILL 10 | B10 | S2 | 2F | R00 | ACF07 | MEP | 260 |  |  |  |  |  |  |  |
| T17PA26007C0 |  | PT-17 ; 2nd Fix, Cable Pulling (Public Area) | 48d | 2012-05-08 | 2012-07-04 | T17PA09201C0 SS+6d, T17PA09205C0 | 162.43d | 140.12d | ELECTRICAL [2683.2 h]; Cost | S08PA26007C0 | PT | C | 17 | PA | ME | 260 | 07 | 2n | BILL 10 | B10 | S2 | 2F | R00 | ACF07 | MEP | 260 |  |  |  |  |  |  |  |
| T17PA26011C0 |  | PT-17 ; 2nd Fix, Inst of Equipment (DB) (Public Area) | 54d | 2012-05-08 | 2012-07-11 | T17PA09205C0 | 146.93d | 110.12d | ELECTRICAL [878.4 h]; Cost | S08PA26011C0 | PT | C | 17 | PA | ME | 260 | 11 | 2n | BILL 10 | B10 | S2 | 2F | R00 | ACF04 | MEP | 260 |  |  |  |  |  | E |  |
| T17PA26053C0 |  | PT-17 ; 2nd Fix, Wiring / Cabling (Public Area) | 42d | 2012-05-08 | 2012-06-27 | T17PA09203C0, T17PA09205C0 | 78.42d | 56.12d | ELECTRICAL [392.4 h]; Cost | S08PA26053C0 | PT | C | 17 | PA | ME | 260 | 53 | 2n | BILL 10 | B10 | S2 | 2F | R00 | ACF07 | MEP | 260 |  | 389 | 977 |  |  |  |  |
| T17PA23008C0 |  | PT-17 ; 1st Fix, Inst of VCD's/FD's (Public Area) | 48d | 2012-05-08 | 2012-07-04 | T17PA23023C0 | 48.3d | 26d | MECHANICAL [1753.2 h]; Cost | S08PA23008C0 | PT | C | 17 | PA | ME | 230 | 08 | 1S | BILL 10 | B10 | S2 | 1F | R00 | ACF04 | MEP | 230 | M1F |  |  |  |  |  |  |
| T17PA23015C0 |  | PT-17 ; 2nd Fix, Insulation of CHW pipe & Duct (Public Area) | 48d | 2012-06-07 | 2012-08-04 | T17PA23009C0, T17PA23017C0, T17PA23023C0 | 22.3d | 0d | MECHANICAL [3064.8 h]; Cost | S08PA23015C0 | PT | C | 17 | PA | ME | 230 | 15 | 2n | BILL 10 | B10 | S2 | 2F | R00 | ACF07 | MEP | 230 |  |  |  |  |  |  |  |
| T17PA05501C0 |  | PT-17 ; Handrails & balustrade (Public Area) | 36d | 2012-06-12 | 2012-07-25 | T17PA09901C0, TAFT105509C0, TAFT805509C0 | 127.67d | 62.12d | SECONDARY STEEL [356 h]; Cost | S08PA05501C0 | PT | C | 17 | PA | SW | 055 | 01 |  | BILL 10 | B10 | S2 | 01 | R00 | ACF03 |  | a |  |  |  |  |  |  |  |
| T17PA26015C0 |  | PT-17 ; Final Fix, Termination & Gladding of Cables (Public Area) | 36d | 2012-06-27 | 2012-08-08 | T17PA26005C0 | 126.42d | 104.12d | ELECTRICAL [148.8 h]; Cost | S08PA26015C0 | PT | C | 17 | PA | ME | 260 | 15 | FF | BILL 10 | B10 | S2 | FF | R00 | ACF07 | MEP | 260 |  |  |  |  |  |  |  |
| T17PA09501C0 |  | PT-17 ; Ceiling Grid and Service Tile (Public Area) | 24d | 2012-08-04 | 2012-09-03 | T17PA09205C0 SS+15d, T17PA21117C0, T17PA23008C0, T17PA23009C0, T17PA23015C0, T17PA27001C0, TAFCI22002R02 FS+58d, T17PA26053C0 FF, T17PA09901C0 | 22.3d | 0d | CEILING GRID FOR GYPSUM [7543.63 h]; CEILING GRID FOR GYPSUM [645.55 m2]; Cost | S08PA09501C0 | PT | C | 17 | PA | CE | 095 | 01 |  | BILL 10 | B10 | S2 | 01 | R00 | ACF06 |  | 095 |  | 323 | 952 |  |  |  | R3 |
| T17PA09601C0 |  | PT-17 ; Flooring (Rubber & etc) (Public Area) | 30d | 2012-09-03 | 2012-10-08 | TAFCI22002R02 FS+58d, T17PA09501C0 | 65.55d | 0d | RUBBER FLOOR [64 h]; RUBBER FLOOR [158 m2]; Cost | S08PA09601C0 | PT | C | 17 | PA | FF | 096 | 01 |  | BILL 10 | B10 | S2 | 03 | R00 | ACF06 |  | RF |  | 326 | 955 |  |  |  | R3 |
| T17PA09602C0 |  | PT-17 ; Flooring (Stone) (Public Area) | 30d | 2012-09-03 | 2012-10-08 | TAFCI22002R02 FS+58d, T17PA09501C0, T17PA05501C0 FF | 65.55d | 0d | STONE FLOOR [28 m2]; STONE FLOOR [28 h]; Cost | S08PA09601C0 | PT | C | 17 | PA | FF | 096 | 01 |  | BILL 10 | B10 | S2 | 09 | R00 | ACF06 |  | ST |  | 326 | 955 |  |  |  | R3 |
| T17PA09905C0 |  | PT-17 ; Ceiling Prime & 1st coat (Public Area) | 30d | 2012-09-03 | 2012-10-08 | T17PA09501C0 | 102.8d | 0d | CEILING PAINT [55 h]; CEILING PAINT [67 m2]; Cost | S08PA09905C0 | PT | C | 17 | PA | PA | 099 | 05 |  | BILL 10 | B10 | S2 | 01 | R00 | ACF06 |  | 099 |  | 330 | 958 |  |  |  |  |
| T17PA21115C0 |  | PT-17 ; 2nd Fix, Inst of Sprinkler droppers (Public Area) | 42d | 2012-09-03 | 2012-10-22 | T17PA09501C0 | 28.3d | 0d | MECHANICAL [1602 h]; Cost | S08PA21115C0 | PT | C | 17 | PA | ME | 211 | 15 | 2n | BILL 10 | B10 | S2 | 2F | R00 | ACF07 | MEP | 211 |  |  |  |  |  |  |  |
| T17PA23021C0 |  | PT-17 ; 2nd Fix, Inst of Flexible Duct & Plenum boxes (Public Area) | 42d | 2012-09-03 | 2012-10-22 | T17PA09205C0, T17PA09501C0 | 28.3d | 0d | MECHANICAL [30 h]; Cost | S08PA23021C0 | PT | C | 17 | PA | ME | 230 | 21 | 2n | BILL 10 | B10 | S2 | 2F | R00 | ACF07 | MEP | 230 |  |  |  |  |  |  |  |
| T17PA26017C0 |  | PT-17 ; Final Fix, Inst of Ceiling rose (Public Area) | 36d | 2012-09-03 | 2012-10-15 | T17PA09501C0 | 22.3d | 0d | ELECTRICAL [61.2 h]; Cost | S08PA26017C0 | PT | C | 17 | PA | ME | 260 | 17 | FF | BILL 10 | B10 | S2 | FF | R00 | ACF07 | MEP | 260 |  |  |  |  |  |  |  |
| T17PA27002C0 |  | PT-17 ; 2nd Fix, Wiring Droppers (Public Area) | 42d | 2012-09-03 | 2012-10-22 | T17PA09501C0 | 22.3d | 0d | ELECTRICAL [392.4 h]; Cost | S08PA27002C0 | PT | C | 17 | PA | ME | 270 | 02 | 2n | BILL 10 | B10 | S2 | 2F | R00 | ACF07 | MEP | 270 |  |  |  |  |  |  |  |
| T17PA27020C0 |  | PT-17 ; 2nd Fix, Inst of ELV Equipment (Panels) (Public Area) | 66d | 2012-09-03 | 2012-11-22 | T17PA09205C0, T17PA09501C0 | 36.8d | 0d | ELECTRICAL [1819.2 h]; Cost | S08PA27020C0 | PT | C | 17 | PA | ME | 270 | 20 | 2n | BILL 10 | B10 | S2 | 2F | R00 | ACF04 | MEP | 270 |  |  |  |  |  | E |  |
| T17PA08107C0 |  | PT-17 ; Doors (Public Area) | 36d | 2012-10-08 | 2012-11-22 | T17PA08103C0, T17PA09501C0, T17PA09601C0, T17PA09901C0, T17PA09602C0 | 65.55d | 0d | ASSORTED DOORS [900 h]; ASSORTED DOORS [90 no]; Cost | S08PA08107C0 | PT | C | 17 | PA | DO | 081 | 07 |  | BILL 10 | B10 | S2 | DR | R00 | ACF06 |  | 081 |  | 317 | 948 |  | 08 |  |  |
| T17PA09903C0 |  | PT-17 ; Wall Final Paint (Public Area) | 30d | 2012-10-08 | 2012-11-14 | T17PA09901C0, T17PA09905C0, T17PA09501C0 | 102.8d | 72d | WALL PAINT [467 h]; WALL PAINT [581 m2]; Cost | S08PA09903C0 | PT | C | 17 | PA | PA | 099 | 03 |  | BILL 10 | B10 | S2 | 02 | R00 | ACF06 |  | 099 |  | 329 | 957 |  |  |  |  |
| T17PA26003C0 |  | PT-17 ; Final Fix, Inst of Light fittings (Public Area) | 48d | 2012-10-15 | 2012-12-15 | T17PA09501C0, T17PA26017C0 | 22.3d | 0d | ELECTRICAL [7815.6 h]; Cost | S08PA26003C0 | PT | C | 17 | PA | ME | 260 | 03 | FF | BILL 10 | B10 | S2 | FF | R00 | ACF07 | MEP | 260 |  |  |  |  |  |  |  |
| T17PA21113C0 |  | PT-17 ; Final Fix, Inst of Sprinklers head/ Extinguisher (Public Area) | 36d | 2012-10-22 | 2012-12-08 | T17PA09501C0, T17PA21115C0 | 28.3d | 6d | MECHANICAL [234 h]; Cost | S08PA21113C0 | PT | C | 17 | PA | ME | 211 | 13 | FF | BILL 10 | B10 | S2 | FF | R00 | ACF07 | MEP | 211 |  |  |  |  |  |  |  |
| T17PA23019C0 |  | PT-17 ; Final Fix, Inst of Grilles & Diffusers (Public Area) | 36d | 2012-10-22 | 2012-12-08 | T17PA09501C0, T17PA23021C0, TZ9GZ23057R2 FF, TV09GZ23059R2 FF | 28.3d | 6d | MECHANICAL [1498.8 h]; Cost | S08PA23019C0 | PT | C | 17 | PA | ME | 230 | 19 | FF | BILL 10 | B10 | S2 | FF | R00 | ACF07 | MEP | 230 |  |  |  |  |  |  |  |
| T17PA27030C0 |  | PT-17 ; Final Fix, Inst of ELV devise (Detector/Speaker) (Public Area) | 42d | 2012-10-22 | 2012-12-15 | T17PA09501C0, T17PA27002C0 | 22.3d | 0d | ELECTRICAL [3571.2 h]; Cost | S08PA27030C0 | PT | C | 17 | PA | ME | 270 | 30 | FF | BILL 10 | B10 | S2 | FF | R00 | ACF07 | MEP | 270 |  |  |  |  |  |  |  |
| T17PA08709C0 |  | PT-17 ; Ironmongery (Public Area) | 31.25d | 2012-11-22 | 2012-12-30 | T17PA08107C0 | 65.55d | 43.25d | IRONMONGERY [1280 h]; IRONMONGERY [128 no]; Cost | S08PA08709C0 | PT | C | 17 | PA | DO | 087 | 09 |  | BILL 10 | B10 | S2 | IM | R00 | ACF06 |  | 087 |  | 322 | 951 |  | 08 |  |  |
| T17PA09701C0 |  | PT-17 ; Wall finishes (ST, WD, WC) (Public Area) | 36d | 2012-11-22 | 2013-01-06 | T17PA26011C0, T17PA27020C0, TVT0114211C0, TVT0214211C0, TVT0714211C0, TVT3114211C0, TVT3214255C0, TVT3314245C0, TAFCI22002R02 FS+158d, T17PA09501C0, T17PA09601C0, T17PA09602C0 | 36.8d | 0d | ASSORTED WALL FINISH [764 h]; ASSORTED WALL FINISH [878 m2]; Cost | S08PA09701C0 | PT | C | 17 | PA | WF | 097 | 01 |  | BILL 10 | B10 | S2 | 01 | R00 | ACF06 |  | 097 |  | 105 | 1002 |  |  |  |  |
| T17PA01006C0 |  | PT-17 ; 2nd, Ceiling Inspection by Consultants (Public Area) | 6d | 2012-12-15 | 2012-12-22 | T17PA21115C0, T17PA23009C0, T17PA23015C0, T17PA27002C0, T17PA09501C0, T17PA21113C0, T17PA23019C0, T17PA26015C0, T17PA26017C0, T17PA26003C0, T17PA27030C0 | 22.3d | 0d | Labor General [0.6 h]; Cost | S08PA01006C0 | PT | C | 17 | PA | ME | 010 | 06 | 2n | BILL 10 | B10 | S2 | CI | R00 | ACF07 | MEP | 010 |  |  |  |  |  |  |  |
| T17PA09503C0 |  | PT-17 ; Ceiling closure - ACT/Gypsum (Public Area) | 20.5d | 2012-12-22 | 2013-01-15 | T17PA01006C0, T17PA21115C0, T17PA26005C0, T17PA27001C0, T17PA27002C0, TAFOA09513C1 FF, T17PA23021C0, T17PA26007C0 | 22.3d | 0d | ASSORTED CEILING FINISH [851.77 h]; CEILING GYPSUM [211.76 h]; ASSORTED CEILING FINISH [1385 m2]; CEILING GYPSUM [646 m2]; Cost | S08PA09503C0 | PT | C | 17 | PA | CE | 095 | 03 |  | BILL 10 | B10 | S2 | 02 | R00 | ACF06 |  | 095 |  | 324 | 953 |  |  |  | R3 |
| T17PA11001C0 |  | PT-17 ; Wall Protection (WP, CG, WG, FCG) (Public Area) | 24d | 2013-01-06 | 2013-02-04 | T17PA09701C0, T17PA09903C0 SS | 36.8d | 14.5d | FF&E [42 h]; Cost | S08PA11001C0 | PT | C | 17 | PA | WF | 110 | 01 |  | BILL 10 | B10 | S2 | 03 | R00 | ACF08 |  | b |  | 326 | 1001 |  |  |  |  |
| T17PA11009C0 |  | PT-17 ; Signage (Public Area) | 15d | 2013-01-06 | 2013-01-23 | T17PA09701C0 | 45.8d | 23.5d | SIGNAGES [173 h]; SIGNAGES [172.58 no]; Cost | S08PA11009C0 | PT | C | 17 | PA | SA | 110 | 09 |  | BILL 10 | B10 | S2 | 09 | R00 | ACF08 |  | c |  | 322 | 951 |  | 08 |  |  |
| T17PA09907C0 |  | PT-17 ; Ceiling Final paint (Public Area) | 18d | 2013-01-15 | 2013-02-06 | T17PA09601C0, T17PA09905C0, T17PA09602C0, T17PA09503C0 | 34.3d | 12d | CEILING PAINT [29 h]; CEILING PAINT [36 m2]; Cost | S08PA09907C0 | PT | C | 17 | PA | PA | 099 | 07 |  | BILL 10 | B10 | S2 | 02 | R00 | ACF06 |  | 099 |  | 331 | 959 |  |  |  |  |
| T17PA26019C0 |  | PT-17 ; Final Fix, Inst of Switch/Sockets (Public Area) | 18d | 2013-01-15 | 2013-02-06 | T17PA09901C0, T17PA09503C0 | 22.3d | 0d | ELECTRICAL [362.4 h]; Cost | S08PA26019C0 | PT | C | 17 | PA | ME | 260 | 19 | FF | BILL 10 | B10 | S2 | FF | R00 | ACF07 | MEP | 260 |  |  |  |  |  |  |  |

| ID | WBS | Activity | Duration | Start | Finish | Predecessors | Complete | Remaining | Planned start | Planned finish | Total float | Free float | Resources | Cost | Actual cost | change id | CCAD BUILDING(SET) | CCAD PHASE(SET) | CCAD FLOOR(SET) | CCAD ZONE(SET) | CCAD WORK(SET) | CCAD SECTION(SET) | CCAD SERIAL No.(SET) | CCAD CBS(SET) | CCAD BILL(SET) | CCAD HANDOVER(SET) | CCAD TAG(SET) | CCAD REV(SET) | CCADACF (SET) | CCAD SSCF | RENZ % COMPLETE | Phase | Area/ Department | Grids | Are | Weight & Nos | Process | Levels | Claimed This Month | P_811 | P_711 | CCAD CSA | U% | CCAD SUB ZONE MEP(SET) | Act Selector % | Change Order # | NEW ACTIVITY ID | CCAD DIVISION(SET) | CCAD MEQ |
| --- | --- | --- | --- | --- | --- | --- | --- | --- | --- | --- | --- | --- | --- | --- | --- | --- | --- | --- | --- | --- | --- | --- | --- | --- | --- | --- | --- | --- | --- | --- | --- | --- | --- | --- | --- | --- | --- | --- | --- | --- | --- | --- | --- | --- | --- | --- | --- | --- | --- |
|  | 10 | **Precommissioning Tesing & snagging (Public Area)** |  | 2013-02-06 | 2013-03-21 |  |  |  |  |  |  |  |  |  |  |  |  |  |  |  |  |  |  |  |  |  |  |  |  |  |  |  |  |  |  |  |  |  |  |  |  |  |  |  |  |  |  |  |  |
| T16TS01807C0 |  | PT-17 ; MEP de-snag, FIREM sign-off | 12d | 2013-02-06 | 2013-02-20 | T17PA26015C0, T17PA21113C0, T17PA23019C0, T17PA26017C0, T17PA26003C0, T17PA27030C0, T17PA26019C0 |  |  |  |  | 22.3d | 0d | TESTING & COMMISSIONING [510 h]; Cost |  |  | T16TS01801C0 | PT | C | 16 | TS | SC | 018 | 01 | BILL 10 | B10 | S2 | 01 | R00 | ACF07 | 018 |  |  |  |  |  |  |  |  |  |  |  |  |  |  |  |  |  |  |  |
| T16TS01812C0 |  | PT-17 ; Touch-up & Clean / JV inspection /CIR /De-snag | 18d | 2013-02-20 | 2013-03-13 | T16TS01807C0, T17PA05501C0, T17PA08709C0, T17PA09601C0, T17PA09701C0, T17PA09903C0, T17PA09907C0, T17PA11001C0, T17PA11009C0, T17PA09602C0, T17PA09503C0 |  |  |  |  | 22.3d | 0d | TESTING & COMMISSIONING [128 h]; Cost |  |  | T16TS01802C0 | PT | C | 16 | TS | SC | 018 | 02 | BILL 10 | B10 | S2 | 02 | R00 | ACF07 | 018 |  |  |  |  |  |  |  |  |  |  |  |  |  |  |  |  |  |  |  |
| T16TS01817C0 |  | PT-17 ; Consultant's final de-snag inspection | 7d | 2013-03-13 | 2013-03-21 | T16TS01812C0, T17TS01805C0 |  |  |  |  | 22.3d | 2.65d | Labor General [1 h]; Cost |  |  | T16TS01803C0 | PT | C | 16 | TS | SC | 018 | 03 | BILL 10 | B10 | S2 | 03 | R00 | ACF07 | 018 |  |  |  |  |  |  |  |  |  |  |  |  |  |  |  |  |  |  |  |
|  | 18 | **Level 18** |  | 2011-03-27 | 2013-04-10 |  |  |  |  |  |  |  |  |  |  |  |  |  |  |  |  |  |  |  |  |  |  |  |  |  |  |  |  |  |  |  |  |  |  |  |  |  |  |  |  |  |  |  |  |
|  | 01 | **Structure & Envelopment** |  | 2011-03-27 | 2012-05-20 |  |  |  |  |  |  |  |  |  |  |  |  |  |  |  |  |  |  |  |  |  |  |  |  |  |  |  |  |  |  |  |  |  |  |  |  |  |  |  |  |  |  |  |  |
| T18SB03303C0 |  | PT-18 ; Corewall Concrete (Zone SB) | 3d | 2011-03-27 A | 2011-04-03 A | T17SB03303C0 | 100% |  | 2011-03-24 | 2011-03-27 |  |  | CONCRETE [6280 h]; CONCRETE [158 m3]; Cost |  |  | T18SB03303C0 | PT | C | 18 | SB | CT | 033 | 03 | BILL 10 | B10 | S2 | 04 | R00 | ACF03 | 033 | 100 | Z2 | PA | TRUS | D | A10 | EREC | 10FLR |  |  |  |  |  |  |  |  |  |  |  |
| T18SA03301C0 |  | PT-18 ; Corewall Concrete (Zone SA) | 3d | 2011-04-01 A | 2011-04-13 A | T17SA03301C0 | 100% |  | 2011-03-09 | 2011-03-13 |  |  | CONCRETE [6280 h]; CONCRETE [158 m3]; Cost |  |  | T18SA03301C0 | PT | C | 18 | SA | CT | 033 | 01 | BILL 10 | B10 | S2 | 04 | R00 | ACF03 | 033 | 100 | Z2 | PA | TRUS | D | A10 | EREC | 10FLR |  |  |  |  |  |  |  |  |  |  |  |
| T18CO05103C0 |  | PT-18 ; Alignment & welding of 18th Floor (Common Zone) | 3d | 2011-06-08 A | 2011-07-31 A | T18CO05101C0 | 100% |  | 2011-07-10 | 2011-07-13 |  |  | STRUCTURAL STEEL [1152 h]; Cost |  |  | T18CO05103C0 | PT | C | 18 | CO | ST | 051 | 03 | BILL 10 | B10 | S2 | 02 | R00 | ACF03 | 051 |  | Z2 | PA | 10TH | E | A12A | EREC | 11FLR | 231883.58 | 100 | 90 | ST |  |  |  |  |  |  |  |
| T18CO05101C0 |  | PT-18 ; Erection of Structural Steel of 18 th Floor (Common Zone) | 5d | 2011-06-18 A | 2011-07-27 A | T17CO05103C0, T18SA03301C0, T18SB03303C0 | 100% |  | 2011-07-04 | 2011-07-10 |  |  | STRUCTURAL STEEL [3223 h]; STRUCTURAL STEEL [105 T(Fe)]; Cost |  |  | T18CO05101C0 | PT | C | 18 | CO | ST | 051 | 01 | BILL 10 | B10 | S2 | 01 | R00 | ACF03 | 051 |  | Z2 | PA | 10TH | E | A12A | EREC | 11FLR | 4173904.3 |  |  | ST |  |  |  |  |  |  |  |
| T18CO05305C0 |  | PT-18 ; Metal Decking 18 FLR (Common Zone) | 12d | 2011-07-10 A | 2011-08-29 A | T18CO05103C0, T19CO05101C0 | 100% |  | 2011-07-10 | 2011-07-24 |  |  | METAL DECKING [2760 h]; METAL DECKING [3493 m2]; Cost |  |  | T18CO05305C0 | PT | C | 18 | CO | ST | 053 | 05 | BILL 10 | B10 | S2 | 03 | R00 | ACF03 | 053 |  | Z2 | PA | 10TH | E | A12A | MDEC | 11FLR |  | 100 | 25 | ST |  |  |  |  |  |  |  |
| T18CO03399C0 |  | PT-18 ; Concrete on Metal Decking 18 FLR (Common Zone) | 10d | 2011-08-10 A | 2011-10-01 | T18CO05305C0 | 90% | 1d | 2011-08-10 | 2011-08-22 | 22.3d | 0d | CONCRETE [23776 h]; CONCRETE [598 m3]; Cost |  |  | T18CO05335C0 | PT | C | 18 | CO | CT | 033 | 99 | BILL 10 | B10 | S2 | 08 | R00 | ACF03 | 033 |  | Z2 | PA | 10TH | E | A12A | MDEC | 11FLR |  | 50 | 0 |  | 90 |  |  |  |  |  |  |
| T18CO07807C0 |  | PT-18 ; Cementitious Fire proofing Lvl 18 (Common Zone) | 12d | 2011-09-13 A | 2011-10-05 | T19CO03399C0 | 70% | 3.6d | 2011-09-13 | 2011-09-26 | 22.9d | 0d | CEMENTITIOUS FIREPROOFING [3066 h]; CEMENTITIOUS FIREPROOFING [6132 m2]; Cost |  |  | T18CO07807C0 | PT | C | 18 | CO | ST | 078 | 07 | BILL 10 | B10 | S2 | 04 | R00 | ACF03 | 078 |  | Z2 | PA | 10TH | E | A12A | FIRE | 11FLR |  |  |  | ST | 70 |  |  |  |  |  |  |
| T18CO04403C0 |  | PT-18 ; C2 Bracket (Common Zone) | 30d | 2011-12-21 | 2012-01-26 | T18CO07807C0, T20CO04403C0 SS |  |  |  |  | 19.65d | 0d | FACADE CURTAIN WALL 2 [522.3 h]; Cost |  |  | T18CO04403C0 | PT | C | 18 | CO | FA | 044 | 03 | BILL 10 | B10 | S2 | FC2 | R00 | ACF05 | 044 |  |  |  |  |  |  |  |  |  |  |  | FA |  |  |  |  |  |  |  |
| T18CO04405C0 |  | PT-18 ; C2 Transom & Mullion (Common Zone) | 30d | 2012-01-08 | 2012-02-13 | T18CO04403C0 SS+14d |  |  |  |  | 20.65d | 0d | FACADE CURTAIN WALL 2 [2088.7 h]; Cost |  |  | T18CO04405C0 | PT | C | 18 | CO | FA | 044 | 05 | BILL 10 | B10 | S2 | FC2 | R00 | ACF05 | 044 |  |  |  |  |  |  |  |  |  |  |  | FA |  |  |  |  |  |  |  |
| T18CO04407C0 |  | PT-18 ; C2 Glazing (Common Zone) | 30d | 2012-01-08 | 2012-02-13 | T18CO04405C0 SS, T18CO04405C0 FF |  |  |  |  | 20.65d | 0d | FACADE CURTAIN WALL 2 [4766.9 h]; FACADE CURTAIN WALL 2 [1742 m2]; FACADE TOTAL QUANTITY m2 [1742 m2]; Cost |  |  | T18CO04407C0 | PT | C | 18 | CO | FA | 044 | 07 | BILL 10 | B10 | S2 | FC2 | R00 | ACF05 | 044 |  |  |  |  |  |  |  |  |  |  |  | FA |  |  |  |  |  |  |  |
| T18CO04415C0 |  | PT-18 ; SG Catwalk Installation (Common Zone) | 52d | 2012-03-20 | 2012-05-20 | TEXCO04407C0 SS+14d, T17CO04415C0 SS |  |  |  |  | 34.02d | 0d | Labor General [4687.6 h]; Cost |  |  | I05CO04411C0 | PT | C | 18 | CO | FA | 044 | 11 | BILL 10 | B10 | S2 | SG | R00 | ACF05 | 044 |  |  |  |  |  |  |  |  |  |  |  | FA |  |  |  |  |  |  |  |
|  | 02 | **PAT RM-1** |  | 2011-09-05 | 2013-04-10 |  |  |  |  |  |  |  |  |  |  |  |  |  |  |  |  |  |  |  |  |  |  |  |  |  |  |  |  |  |  |  |  |  |  |  |  |  |  |  |  |  |  |  |  |
| T18P123001C0 |  | PT-18 ; 1st Fix, Inst. of Supports for MEP (PAT RM-1) | 36d | 2011-09-05 A | 2011-11-15 | T18CO07807C0 | 10% | 32.4d | 2011-09-27 | 2011-11-10 | 29d | 0d | MECHANICAL [4027.2 h]; Cost [45150.4 AED] | 45,150.38 | 4,515.04 | T18P123001C0 | PT | C | 18 | P1 | ME | 230 | 01 | BILL 10 | B10 | S2 | 1F | R00 | ACF04 | 230 |  |  |  |  |  |  |  |  |  |  |  | MEP |  | 1S | M1F |  |  |  |  |
| T18P126001C0 |  | PT-18 ; 1st Fix, Inst of Trunking/Conduiting (PAT RM-1) | 48d | 2011-09-05 A | 2012-01-11 | T18CO07807C0, T18P123001C0 | 5% | 45.6d | 2011-11-12 | 2012-01-09 | 29d | 0d | ELECTRICAL [734.4 h]; Cost [37790.1 AED] | 37,790.1 | 1,889.5 | T18P126001C0 | PT | C | 18 | P1 | ME | 260 | 01 | BILL 10 | B10 | S2 | 1F | R00 | ACF04 | 260 |  |  |  |  |  |  |  |  |  |  |  | MEP |  | 1S | M1F |  |  |  |  |
| T18P126009C0 |  | PT-18 ; 2nd Fix, Inst of Wall conduites (PAT RM-1) | 42d | 2011-09-05 A | 2012-03-31 | T18P109201C0 | 5% | 39.9d | 2012-01-21 | 2012-03-11 | 37.62d | 2.1d | ELECTRICAL [734.4 h]; Cost [37790.1 AED] | 37,790.1 | 1,889.5 | T18P126009C0 | PT | C | 18 | P1 | ME | 260 | 09 | BILL 10 | B10 | S2 | 2F | R00 | ACF07 | 260 |  |  |  |  |  |  |  |  |  |  |  | MEP |  | 2n |  |  |  |  |  |
| T18P127010C0 |  | PT-18 ; 1st Fix, Inst of Trunking for ELV system (PAT RM-1) | 48d | 2011-11-16 | 2012-01-14 | T18CO07807C0, T18P123001C0, T18P126001C0 SS+14d |  |  |  |  | 29d | 0d | ELECTRICAL [1512 h]; Cost |  |  | T18P127010C0 | PT | C | 18 | P1 | ME | 270 | 10 | BILL 10 | B10 | S2 | 1F | R00 | ACF04 | 270 |  |  |  |  |  |  |  |  |  |  |  | MEP |  | 1S | M1F |  |  |  |  |
| T18P126013C0 |  | PT-18 ; 1st Fix, Inst of Cable Tray (PAT RM-1) | 48d | 2011-11-29 | 2012-01-25 | T18CO07807C0, T18P123001C0, T18P127010C0 SS+10d |  |  |  |  | 29d | 0d | ELECTRICAL [399.6 h]; Cost |  |  | T18P126013C0 | PT | C | 18 | P1 | ME | 260 | 13 | BILL 10 | B10 | S2 | 1F | R00 | ACF04 | 260 |  |  |  |  |  |  |  |  |  |  |  | MEP |  | 1S | M1F |  |  |  |  |
| T18P109702C0 |  | PT-18 ; Installation of Bathroom Pods (PAT RM-1) | 0d | 2011-12-11 | 2011-12-11 | T17P109702C0, T17P209702C0, T18CO07807C0, AAFCI09201R02 FS+118d |  |  |  |  | 176.25d | 0d | Cost |  |  | T10P109701C0 | PT | C | 18 | P1 | BP | 097 | 01 | BILL 10 | B10 | S2 | FG | R00 | ACF06 | 097 |  |  |  |  |  |  |  |  |  |  |  |  |  |  |  | 105 | 1002 |  |  |
| T18P122019C0 |  | PT-18 ; 1st Fix, Inst of Drainage pipe (ceiling) (PAT RM-1) | 48d | 2011-12-11 | 2012-02-06 | T18P123001C0, T18P126013C0 SS+9d |  |  |  |  | 29d | 0d | PLUMBING [1378.8 h]; Cost |  |  | T18P122019C0 | PT | C | 18 | P1 | ME | 220 | 19 | BILL 10 | B10 | S2 | 1F | R00 | ACF04 | 220 |  |  |  |  |  |  |  |  |  |  |  | MEP | 0 | 1S | M1F |  |  |  |  |
| T18P122005C0 |  | PT-18 ; 1st Fix, Inst of Water supply pipe (ceiling) (PAT RM-1) | 60d | 2011-12-22 | 2012-03-03 | T18P122019C0 SS+10d, T18P123001C0 |  |  |  |  | 29d | 0d | PLUMBING [4548 h]; Cost |  |  | T18P122005C0 | PT | C | 18 | P1 | ME | 220 | 05 | BILL 10 | B10 | S2 | 1F | R00 | ACF04 | 220 |  |  |  |  |  |  |  |  |  |  |  | MEP |  | 1S | M1F |  |  |  |  |
| T18P109201C0 |  | PT-18 ; Metal Studs (PAT RM-1) | 42d | 2011-12-24 | 2012-02-13 | T18P123001C0, T18CO04407C0 FF, T18CO04405C0 FF |  |  |  |  | 23.4d | 0d | PARTITIONS [3551 h]; PARTITIONS - Metal Studs [493 m]; Cost |  |  | T18P109201C0 | PT | C | 18 | P1 | PT | 092 | 01 | BILL 10 | B10 | S2 | 1F | R00 | ACF06 | 092 |  |  |  |  |  |  |  |  |  |  |  | GP |  |  | PMS | 313 | 944 |  |  |
| T18P121111C0 |  | PT-18 ; 1st Fix, Inst of Sprinkler main pipe (PAT RM-1) | 48d | 2012-01-07 | 2012-03-03 | T18P122005C0 SS+12d, T18P123001C0 |  |  |  |  | 29d | 0d | MECHANICAL [853.2 h]; Cost |  |  | T18P121111C0 | PT | C | 18 | P1 | ME | 211 | 11 | BILL 10 | B10 | S2 | 1F | R00 | ACF04 | 211 |  |  |  |  |  |  |  |  |  |  |  | MEP |  | 1S | M1F |  |  |  |  |
| T18P122007C0 |  | PT-18 ; 1st Fix, Inst of Medical Gas pipe (PAT RM-1) | 48d | 2012-01-17 | 2012-03-13 | T18P121111C0 SS+9d, T18P123001C0 |  |  |  |  | 58.12d | 22.6d | PLUMBING [1149.6 h]; Cost |  |  | T18P122007C0 | PT | C | 18 | P1 | ME | 220 | 07 | BILL 10 | B10 | S2 | 1F | R00 | ACF04 | 220 |  |  |  |  |  |  |  |  |  |  |  | MEP |  | 1S | M1F |  |  |  |  |
| T18P127001C0 |  | PT-18 ; 1st Fix, Wiring/ Cabling work (PAT RM-1) | 48d | 2012-01-26 | 2012-03-22 | T18P126001C0, T18P126013C0, T18P127010C0 |  |  |  |  | 122d | 98.6d | ELECTRICAL [392.4 h]; Cost |  |  | T18P127001C0 | PT | C | 18 | P1 | ME | 270 | 01 | BILL 10 | B10 | S2 | 1F | R00 | ACF04 | 270 |  |  |  |  |  |  |  |  |  |  |  | MEP |  | 1S | M1F |  |  |  |  |
| T18P123017C0 |  | PT-18 ; 1st Fix, Inst of CHW pipe (PAT RM-1) | 54d | 2012-01-29 | 2012-04-02 | T18P121111C0 SS+14d, T18P123001C0, T18P105503C0 FF+18d |  |  |  |  | 23.4d | 0d | MECHANICAL [2467.2 h]; Cost |  |  | T18P123017C0 | PT | C | 18 | P1 | ME | 230 | 17 | BILL 10 | B10 | S2 | 1F | R00 | ACF04 | 230 |  |  |  |  |  |  |  |  |  |  |  | MEP |  | 1S | M1F |  |  |  |  |
| T18P123023C0 |  | PT-18 ; 1st Fix, Inst of Main Ducting (PAT RM-1) | 60d | 2012-02-11 | 2012-04-21 | T18P123001C0, T18P123017C0 SS+10d |  |  |  |  | 49.4d | 0d | MECHANICAL [8022 h]; Cost |  |  | T18P123023C0 | PT | C | 18 | P1 | ME | 230 | 23 | BILL 10 | B10 | S2 | 1F | R00 | ACF04 | 230 |  |  |  |  |  |  |  |  |  |  |  | MEP |  | 1S | M1F |  |  |  |  |
| T18P105503C0 |  | PT-18 ; Ceiling Support for medical equipment (PAT RM-1) | 24d | 2012-02-13 | 2012-03-12 | T18P109201C0, TAFCI22001R20 FS+65d |  |  |  |  | 23.4d | 0d | SECONDARY STEEL [62 h]; STRUCTURAL STEEL [14 T(Fe)]; Cost |  |  | D03EY05503C0 | PT | C | 18 | P1 | SW | 055 | 03 | BILL 10 | B10 | S2 | 03 | R00 | ACF03 | b |  |  |  |  |  |  |  |  |  |  |  |  |  |  |  | 335 | 962 |  |  |
| T18P105511C0 |  | PT-18 ; Wall reinforcement for MEP/Medical (PAT RM-1) | 24d | 2012-02-13 | 2012-03-12 | T18P109201C0, TAFCI22001R02 FS+65d |  |  |  |  | 59.4d | 23.88d | SECONDARY STEEL [26 h]; Cost |  |  | T18P105511C0 | PT | C | 18 | P1 | SW | 055 | 11 | BILL 10 | B10 | S2 | 03 | R00 | ACF03 | b |  |  |  |  |  |  |  |  |  |  |  |  |  |  |  |  |  |  |  |
| T18P108103C0 |  | PT-18 ; Door Frames (PAT RM-1) | 36d | 2012-02-13 | 2012-03-26 | T18P109201C0, GNHE08101C0 FS+126d |  |  |  |  | 47.4d | 11.88d | ASSORTED DOORS [303 h]; Cost |  |  | T18P208103C0 | PT | C | 18 | P1 | DO | 081 | 03 | BILL 10 | B10 | S2 | DF | R00 | ACF06 | 081 |  |  |  |  |  |  |  |  |  |  |  |  |  |  |  | 316 | 947 | 08 |  |
| T18P109203C0 |  | PT-18 ; Partitions 1st face (PAT RM-1) | 42d | 2012-02-13 | 2012-04-02 | T18P109201C0 |  |  |  |  | 41.4d | 5.88d | PARTITIONS [493 m]; PARTITIONS [2772 h]; Cost |  |  | T18P109203C0 | PT | C | 18 | P1 | PT | 092 | 03 | BILL 10 | B10 | S2 | 2F | R00 | ACF06 | 092 |  |  |  |  |  |  |  |  |  |  |  | GP |  |  | P1F | 314 | 945 |  |  |
| T18P122011C0 |  | PT-18 ; 2nd Fix, Drainage/Water pipe (wall) (PAT RM-1) | 42d | 2012-02-13 | 2012-04-02 | T18P109201C0 |  |  |  |  | 35.52d | 0d | PLUMBING [1378.8 h]; Cost |  |  | T18P122011C0 | PT | C | 18 | P1 | ME | 220 | 11 | BILL 10 | B10 | S2 | 2F | R00 | ACF07 | 220 |  |  |  |  |  |  |  |  |  |  |  | MEP | 0 | 2n |  |  |  |  |  |
| T18P122015C0 |  | PT-18 ; 2nd Fix, Medical Gas pipe (PAT RM-1) | 42d | 2012-02-13 | 2012-04-02 | T18P109201C0, T18P122007C0 SS |  |  |  |  | 35.52d | 0d | PLUMBING [1149.6 h]; Cost |  |  | T18P122015C0 | PT | C | 18 | P1 | ME | 220 | 15 | BILL 10 | B10 | S2 | 2F | R00 | ACF07 | 220 |  |  |  |  |  |  |  |  |  |  |  | MEP |  | 2n |  |  |  |  |  |
| T18P121117C0 |  | PT-18 ; 1st Fix, Inst of Sprinkler branch pipe (PAT RM-1) | 48d | 2012-03-04 | 2012-04-28 | T18P109201C0, T18P121111C0, T18P105503C0 FF+18d |  |  |  |  | 91d | 67.6d | MECHANICAL [561.6 h]; Cost |  |  | T18P121117C0 | PT | C | 18 | P1 | ME | 211 | 17 | BILL 10 | B10 | S2 | 1F | R00 | ACF04 | 211 |  |  |  |  |  |  |  |  |  |  |  | MEP |  | 1S | M1F |  |  |  |  |
| T18P101005C0 |  | PT-18 ; 2nd, Wall Inspection by Consultant (PAT RM-1) | 5.88d | 2012-04-02 | 2012-04-09 | T18P122011C0, T18P122015C0, T18P126009C0 |  |  |  |  | 35.52d | 0d | Labor General [1.2 h]; Cost |  |  | T18P101005C0 | PT | C | 18 | P1 | ME | 010 | 05 | BILL 10 | B10 | S2 | WI | R00 | ACF07 | 010 |  |  |  |  |  |  |  |  |  |  |  | MEP |  | 2n |  |  |  |  |  |
| T18P123009C0 |  | PT-18 ; 2nd Fix, Inst of VAV'S CHW connection (PAT RM-1) | 42d | 2012-04-02 | 2012-05-21 | T18P123017C0 |  |  |  |  | 23.4d | 0d | MECHANICAL [1450.8 h]; Cost |  |  | T18P123009C0 | PT | C | 18 | P1 | ME | 230 | 09 | BILL 10 | B10 | S2 | 2F | R00 | ACF07 | 230 |  |  |  |  |  |  |  |  |  |  |  | MEP |  | 2n |  |  |  |  |  |
| T18P109205C0 |  | PT-18 ; Partitions Closing (PAT RM-1) | 42d | 2012-04-09 | 2012-05-28 | T18P101005C0, T18P105511C0, T18P109203C0, T18P122005C0, T18P122019C0, TAFOA09214C1 FF, T18P109702C0 FF, T18P108103C0 |  |  |  |  | 35.52d | 0d | PARTITIONS [493 m]; PARTITIONS [3563 h]; Cost |  |  | T18P109205C0 | PT | C | 18 | P1 | PT | 092 | 05 | BILL 10 | B10 | S2 | FF | R00 | ACF06 | 092 |  |  |  |  |  |  |  |  |  |  |  | GP |  |  | P2F | 315 | 946 |  |  |
| T18P123008C0 |  | PT-18 ; 1st Fix, Inst of VCD's/FD's (PAT RM-1) | 48d | 2012-04-21 | 2012-06-17 | T18P123023C0, T18P105503C0 FF+18d |  |  |  |  | 49.4d | 26d | MECHANICAL [1753.2 h]; Cost |  |  | T18P123008C0 | PT | C | 18 | P1 | ME | 230 | 08 | BILL 10 | B10 | S2 | 1F | R00 | ACF04 | 230 |  |  |  |  |  |  |  |  |  |  |  | MEP |  | 1S | M1F |  |  |  |  |
| T18P123015C0 |  | PT-18 ; 2nd Fix, Insulation of CHW pipe & Duct (PAT RM-1) | 48d | 2012-05-21 | 2012-07-17 | T18P123009C0, T18P123017C0, T18P123023C0 |  |  |  |  | 23.4d | 0d | MECHANICAL [3064.8 h]; Cost |  |  | T18P123015C0 | PT | C | 18 | P1 | ME | 230 | 15 | BILL 10 | B10 | S2 | 2F | R00 | ACF07 | 230 |  |  |  |  |  |  |  |  |  |  |  | MEP |  | 2n |  |  |  |  |  |
| T18P107103C0 |  | PT-18 ; Waterproofing (PAT RM-1) | 12d | 2012-05-28 | 2012-06-11 | T18P109205C0 |  |  |  |  | 89.53d | 66.12d | THERMAL & MOISTURE [504 h]; THERMAL & MOISTURE [3326 m2]; Cost |  |  | T18P107103C0 | PT | C | 18 | P1 | FF | 071 | 03 | BILL 10 | B10 | S2 | 01 | R00 | ACF03 | 071 |  |  |  |  |  |  |  |  |  |  |  |  |  |  |  | 105 | 999 |  |  |
| T18P109901C0 |  | PT-18 ; Wall Prime & 1st coat (PAT RM-1) | 30d | 2012-05-28 | 2012-07-03 | T18P109205C0 |  |  |  |  | 35.52d | 0d | WALL PAINT [587 h]; WALL PAINT [731 m2]; Cost |  |  | T18P109901C0 | PT | C | 18 | P1 | PA | 099 | 01 | BILL 10 | B10 | S2 | 01 | R00 | ACF06 | 099 |  |  |  |  |  |  |  |  |  |  |  |  |  |  |  | 328 | 956 |  |  |
| T18P126005C0 |  | PT-18 ; 2nd Fix, Wiring for Power/Lighting/Emergency (PAT RM-1) | 42d | 2012-05-28 | 2012-07-17 | T18P109205C0 |  |  |  |  | 120.28d | 0d | ELECTRICAL [392.4 h]; Cost |  |  | T18P126005C0 | PT | C | 18 | P1 | ME | 260 | 05 | BILL 10 | B10 | S2 | 2F | R00 | ACF07 | 260 |  |  |  |  |  |  |  |  |  |  |  | MEP |  | 2n |  |  |  |  |  |
| T18P126007C0 |  | PT-18 ; 2nd Fix, Cable Pulling (PAT RM-1) | 48d | 2012-05-28 | 2012-07-24 | T18P109201C0 SS+6d, T18P109205C0 |  |  |  |  | 155.53d | 132.12d | ELECTRICAL [2683.2 h]; Cost |  |  | T18P126007C0 | PT | C | 18 | P1 | ME | 260 | 07 | BILL 10 | B10 | S2 | 2F | R00 | ACF07 | 260 |  |  |  |  |  |  |  |  |  |  |  | MEP |  | 2n |  |  |  |  |  |
| T18P126011C0 |  | PT-18 ; 2nd Fix, Inst of Equipment (DB) (PAT RM-1) | 54d | 2012-05-28 | 2012-07-31 | T18P109205C0 |  |  |  |  | 143.53d | 90.12d | ELECTRICAL [878.4 h]; Cost |  |  | T18P126011C0 | PT | C | 18 | P1 | ME | 260 | 11 | BILL 10 | B10 | S2 | 2F | R00 | ACF04 | 260 |  |  |  |  |  |  |  |  |  |  |  | MEP |  | 2n |  |  |  |  | E |
| T18P126053C0 |  | PT-18 ; 2nd Fix, Wiring / Cabling (PAT RM-1) | 42d | 2012-05-28 | 2012-07-17 | T18P109203C0, T18P109205C0 |  |  |  |  | 59.52d | 36.12d | ELECTRICAL [392.4 h]; Cost |  |  | T18P126053C0 | PT | C | 18 | P1 | ME | 260 | 53 | BILL 10 | B10 | S2 | 2F | R00 | ACF07 | 260 |  |  |  |  |  |  |  |  |  |  |  | MEP |  | 2n |  | 389 | 977 |  |  |
| T18P105501C0 |  | PT-18 ; Handrails & balustrade (PAT RM-1) | 33.25d | 2012-07-03 | 2012-08-11 | T18P109901C0 |  |  |  |  | 80.28d | 56.88d | SECONDARY STEEL [230 h]; Cost |  |  | T18P105501C0 | PT | C | 18 | P1 | SW | 055 | 01 | BILL 10 | B10 | S2 | 01 | R00 | ACF03 | a |  |  |  |  |  |  |  |  |  |  |  |  |  |  |  |  |  |  |  |
| T18P126015C0 |  | PT-18 ; Final Fix, Termination & Gladding of Cables (PAT RM-1) | 36d | 2012-07-17 | 2012-08-30 | T18P126005C0 |  |  |  |  | 120.28d | 84.12d | ELECTRICAL [148.8 h]; Cost |  |  | T18P126015C0 | PT | C | 18 | P1 | ME | 260 | 15 | BILL 10 | B10 | S2 | FF | R00 | ACF07 | 260 |  |  |  |  |  |  |  |  |  |  |  | MEP |  | FF |  |  |  |  |  |
| T18P109501C0 |  | PT-18 ; Ceiling Grid and Service Tile (PAT RM-1) | 36d | 2012-07-17 | 2012-08-30 | T18P105503C0, T18P109205C0, T18P121117C0, T18P123008C0, T18P123009C0, T18P123015C0, T18P127001C0, T18P126053C0 FF, T18P109901C0 |  |  |  |  | 23.4d | 0d | CEILING GRID FOR GYPSUM [4870 h]; CEILING GRID FOR GYPSUM [416.8 m2]; Cost |  |  | T18P109501C0 | PT | C | 18 | P1 | CE | 095 | 01 | BILL 10 | B10 | S2 | 01 | R00 | ACF06 | 095 |  |  |  |  |  |  |  |  |  |  |  |  |  |  |  | 323 | 952 |  |  |
| T18P109510C0 |  | PT-18 ; Patient Lift Ceiling Rail (by others) (PAT RM-1) | 30d | 2012-07-17 | 2012-08-23 | T18P109501C0 SS |  |  |  |  | 131.4d | 108d | Labor General [0.2 h]; Cost |  |  | I06P109501C0 | PT | C | 18 | P1 | CE | 095 | 10 | BILL 10 | B10 | S2 | 02 | R00 | ACF06 | 095 |  |  |  |  |  |  |  |  |  |  |  |  |  |  |  | 323 | 952 |  |  |
| T18P109305C0 |  | PT-18 ; Flooring (Terrazzo) (PAT RM-1) | 42d | 2012-08-30 | 2012-10-18 | T18P107103C0, T18P109501C0 |  |  |  |  | 23.4d | 0d | TERRAZO FLOOR [1427 m2]; TERRAZO FLOOR [2568 h]; Cost |  |  | T18P109305C0 | PT | C | 18 | P1 | FF | 096 | 05 | BILL 10 | B10 | S2 | 07 | R00 | ACF06 | TZ |  |  |  |  |  |  |  |  |  |  |  |  |  |  |  | 106 | 1000 |  |  |
| T18P109601C0 |  | PT-18 ; Flooring (Rubber & etc) (PAT RM-1) | 42d | 2012-08-30 | 2012-10-18 | T18P109501C0, T18P105501C0 FF |  |  |  |  | 23.4d | 0d | RUBBER FLOOR [48 h]; RUBBER FLOOR [102 m2]; Cost |  |  | T18P109601C0 | PT | C | 18 | P1 | FF | 096 | 01 | BILL 10 | B10 | S2 | 03 | R00 | ACF06 | RF |  |  |  |  |  |  |  |  |  |  |  |  |  |  |  | 326 | 955 |  |  |
| T18P109905C0 |  | PT-18 ; Ceiling Prime & 1st coat (PAT RM-1) | 30d | 2012-08-30 | 2012-10-04 | T18P109501C0 |  |  |  |  | 119.4d | 0d | CEILING PAINT [36 h]; CEILING PAINT [43 m2]; Cost |  |  | T18P109905C0 | PT | C | 18 | P1 | PA | 099 | 05 | BILL 10 | B10 | S2 | 01 | R00 | ACF06 | 099 |  |  |  |  |  |  |  |  |  |  |  |  |  |  |  | 330 | 958 |  |  |
| T18P121115C0 |  | PT-18 ; 2nd Fix, Inst of Sprinkler droppers (PAT RM-1) | 42d | 2012-08-30 | 2012-10-18 | T18P109501C0 |  |  |  |  | 42.15d | 0d | MECHANICAL [1602 h]; Cost |  |  | T18P121115C0 | PT | C | 18 | P1 | ME | 211 | 15 | BILL 10 | B10 | S2 | 2F | R00 | ACF07 | 211 |  |  |  |  |  |  |  |  |  |  |  | MEP |  | 2n |  |  |  |  |  |
| T18P123021C0 |  | PT-18 ; 2nd Fix, Inst of Flexible Duct & Plenum boxes (PAT RM-1) | 42d | 2012-08-30 | 2012-10-18 | T18P109205C0, T18P109501C0 |  |  |  |  | 42.15d | 0d | MECHANICAL [30 h]; Cost |  |  | T18P123021C0 | PT | C | 18 | P1 | ME | 230 | 21 | BILL 10 | B10 | S2 | 2F | R00 | ACF07 | 230 |  |  |  |  |  |  |  |  |  |  |  | MEP |  | 2n |  |  |  |  |  |
| T18P126017C0 |  | PT-18 ; Final Fix, Inst of Ceiling rose (PAT RM-1) | 36d | 2012-08-30 | 2012-10-11 | T18P109501C0 |  |  |  |  | 36.15d | 0d | ELECTRICAL [61.2 h]; Cost |  |  | T18P126017C0 | PT | C | 18 | P1 | ME | 260 | 17 | BILL 10 | B10 | S2 | FF | R00 | ACF07 | 260 |  |  |  |  |  |  |  |  |  |  |  | MEP |  | FF |  |  |  |  |  |
| T18P127002C0 |  | PT-18 ; 2nd Fix, Wiring Droppers (PAT RM-1) | 42d | 2012-08-30 | 2012-10-18 | T18P109501C0 |  |  |  |  | 36.15d | 0d | ELECTRICAL [392.4 h]; Cost |  |  | T18P127002C0 | PT | C | 18 | P1 | ME | 270 | 02 | BILL 10 | B10 | S2 | 2F | R00 | ACF07 | 270 |  |  |  |  |  |  |  |  |  |  |  | MEP |  | 2n |  |  |  |  |  |
| T18P127020C0 |  | PT-18 ; 2nd Fix, Inst of ELV Equipment (Panels) (PAT RM-1) | 66d | 2012-08-30 | 2012-11-19 | T18P109205C0, T18P109501C0 |  |  |  |  | 53.4d | 0d | ELECTRICAL [1819.2 h]; Cost |  |  | T18P127020C0 | PT | C | 18 | P1 | ME | 270 | 20 | BILL 10 | B10 | S2 | 2F | R00 | ACF04 | 270 |  |  |  |  |  |  |  |  |  |  |  | MEP |  | 2n |  |  |  |  | E |
| T18P140303C0 |  | PT-18 ; Final Fix, Pneumatic Station (PAT RM-1) | 36d | 2012-08-30 | 2012-10-11 | T18P109501C0 |  |  |  |  | 131.4d | 108d | MECHANICAL [2974.8 h]; Cost |  |  | T18P140303C0 | PT | C | 18 | P1 | ME | 403 | 03 | BILL 10 | B10 | S2 | FF | R00 | ACF07 | 403 |  |  |  |  |  |  |  |  |  |  |  | MEP |  | FF |  |  |  |  |  |
| T18P109903C0 |  | PT-18 ; Wall Final Paint (PAT RM-1) | 30d | 2012-10-04 | 2012-11-11 | T18P109901C0, T18P109905C0, T18P109501C0 |  |  |  |  | 119.4d | 72d | WALL PAINT [316 h]; WALL PAINT [394 m2]; Cost |  |  | T18P109903C0 | PT | C | 18 | P1 | PA | 099 | 03 | BILL 10 | B10 | S2 | 02 | R00 | ACF06 | 099 |  |  |  |  |  |  |  |  |  |  |  |  |  |  |  | 329 | 957 |  |  |
| T18P126003C0 |  | PT-18 ; Final Fix, Inst of Light fittings (PAT RM-1) | 48d | 2012-10-11 | 2012-12-11 | T18P109501C0, T18P126017C0 |  |  |  |  | 36.15d | 0d | ELECTRICAL [7815.6 h]; Cost |  |  | T18P126003C0 | PT | C | 18 | P1 | ME | 260 | 03 | BILL 10 | B10 | S2 | FF | R00 | ACF07 | 260 |  |  |  |  |  |  |  |  |  |  |  | MEP |  | FF |  |  |  |  |  |
| T18P106101C0 |  | PT-18 ; Wood / caseworks (PAT RM-1) | 60d | 2012-10-18 | 2013-01-02 | T18CO04407C0, T18P109501C0, T18P109601C0, T18P109901C0, TAFWA00101M0, T18P109305C0 |  |  |  |  | 23.4d | 0d | WOOD WORK/CASEWORK [873.9 no]; WOOD WORK/CASEWORK [1915 h]; Cost |  |  | T18P106101C0 | PT | C | 18 | P1 | WO | 061 | 01 | BILL 10 | B10 | S2 | WW | R00 | ACF06 | 061 |  |  |  |  |  |  |  |  |  |  |  |  |  |  |  | 332 | 960 |  |  |
| T18P106102C0 |  | PT-18 ; Head/Foot Wall (PAT RM-1) | 54d | 2012-10-18 | 2012-12-25 | T18CO04407C0, T18P109501C0, TAFWA00101M0, T18P106101C0 SS |  |  |  |  | 53.4d | 0d | WOOD WORK/CASEWORK [1649 h]; Cost |  |  | T18P106102C0 | PT | C | 18 | P1 | WO | 061 | 02 | BILL 10 | B10 | S2 | WW | R00 | ACF06 | 061 |  |  |  |  |  |  |  |  |  |  |  |  |  |  |  | 332 | 960 |  |  |
| T18P108107C0 |  | PT-18 ; Doors (PAT RM-1) | 36d | 2012-10-18 | 2012-12-04 | T18P109501C0, T18P109601C0, T18P109901C0 |  |  |  |  | 72.65d | 0d | ASSORTED DOORS [610 h]; ASSORTED DOORS [61 no]; Cost |  |  | T18P108107C0 | PT | C | 18 | P1 | DO | 081 | 07 | BILL 10 | B10 | S2 | DR | R00 | ACF06 | 081 |  |  |  |  |  |  |  |  |  |  |  |  |  |  |  | 317 | 948 | 08 |  |
| T18P111071C0 |  | PT-18 ; Food Service Equipment (PAT RM-1) | 60d | 2012-10-18 | 2013-01-02 | T18P109601C0, T18P108103C0, T18P109305C0 |  |  |  |  | 23.4d | 0d | FF&E [3718 h]; Cost |  |  | T18P111071C0 | PT | C | 18 | P1 | EQ | 110 | 71 | BILL 10 | B10 | S2 | 06 | R00 | ACF08 | KE |  |  |  |  |  |  |  |  |  |  |  | FK |  |  |  | 313 | 944 |  |  |
| T18P121113C0 |  | PT-18 ; Final Fix, Inst of Sprinklers head/ Extinguisher (PAT RM-1) | 36d | 2012-10-18 | 2012-12-04 | T18P109501C0, T18P121115C0 |  |  |  |  | 42.15d | 6d | MECHANICAL [234 h]; Cost |  |  | T18P121113C0 | PT | C | 18 | P1 | ME | 211 | 13 | BILL 10 | B10 | S2 | FF | R00 | ACF07 | 211 |  |  |  |  |  |  |  |  |  |  |  | MEP |  | FF |  |  |  |  |  |

| ID | WBS | Activity | Duration | Start | Finish | Predecessors | Complete | Remaining | Planned start | Planned finish | Total float | Free float | Resources | Cost | Actual cost | change id | CCAD BUILDING(SET) | CCAD PHASE(SET) | CCAD FLOOR(SET) | CCAD ZONE(SET) | CCAD WORK(SET) | CCAD SECTION(SET) | CCAD SERIAL No.(SET) | CCAD SUB ZONE MEP(SET) | CCAD CBS(SET) | CCAD BILL(SET) | CCAD HANDOVER(SET) | CCAD TAG(SET) | CCAD REV(SET) | CCADACF (SET) | CCAD CSA | CCAD SSCF | Change Order # | NEW ACTIVITY ID | CCAD DIVISION(SET) | Act Selector % | U% | CCAD MEQ |
| --- | --- | --- | --- | --- | --- | --- | --- | --- | --- | --- | --- | --- | --- | --- | --- | --- | --- | --- | --- | --- | --- | --- | --- | --- | --- | --- | --- | --- | --- | --- | --- | --- | --- | --- | --- | --- | --- | --- |
| T18P122025C0 |  | PT-18 ; Final Fix, Inst of Sanitary Ware (PAT RM-1) | 42d | 2012-10-18 | 2012-12-11 | T18P109205C0, T18P109305C0 |  |  |  |  | 77.4d | 0d | PLUMBING [3690 h]; Cost |  |  | T18P122025C0 | PT | C | 18 | P1 | ME | 220 | 25 | FF | BILL 10 | B10 | S2 | FF | R00 | ACF07 | MEP | 220 |  |  |  |  |  |  |
| T18P123019C0 |  | PT-18 ; Final Fix, Inst of Grilles & Diffusers (PAT RM-1) | 36d | 2012-10-18 | 2012-12-04 | T18P109501C0, T18P123021C0 |  |  |  |  | 42.15d | 6d | MECHANICAL [1498.8 h]; Cost |  |  | T18P123019C0 | PT | C | 18 | P1 | ME | 230 | 19 | FF | BILL 10 | B10 | S2 | FF | R00 | ACF07 | MEP | 230 |  |  |  |  |  |  |
| T18P127030C0 |  | PT-18 ; Final Fix, Inst of ELV device (Detector/Speaker) (PAT RM-1) | 42d | 2012-10-18 | 2012-12-11 | T18P109501C0, T18P127002C0 |  |  |  |  | 36.15d | 0d | ELECTRICAL [3571.2 h]; Cost |  |  | T18P127030C0 | PT | C | 18 | P1 | ME | 270 | 30 | FF | BILL 10 | B10 | S2 | FF | R00 | ACF07 | MEP | 270 |  |  |  |  |  |  |
| T18P122021C0 |  | PT-18 ; Final Fix, Terminate Sanitary Ware & Appliances (PAT RM-1) | 42d | 2012-10-25 | 2012-12-18 | T18P122011C0, T18P122025C0 SS+6d |  |  |  |  | 77.4d | 54d | PLUMBING [3361.2 h]; Cost |  |  | T18P122021C0 | PT | C | 18 | P1 | ME | 220 | 21 | FF | BILL 10 | B10 | S2 | FF | R00 | ACF07 | MEP | 220 |  |  |  |  |  |  |
| T18P109701C0 |  | PT-18 ; Wall finishes (ST, WD, WC) (PAT RM-1) | 36d | 2012-11-19 | 2013-01-02 | T18P126011C0, T18P127020C0, T18P109501C0, T18P109601C0, T18P109305C0 |  |  |  |  | 53.4d | 0d | ASSORTED WALL FINISH [519 h]; ASSORTED WALL FINISH [595 m2]; Cost |  |  | T18P109701C0 | PT | C | 18 | P1 | WF | 097 | 01 |  | BILL 10 | B10 | S2 | 01 | R00 | ACF06 |  | 097 | 105 | 1002 |  |  |  |  |
| T18P108709C0 |  | PT-18 ; Ironmongery (PAT RM-1) | 28.75d | 2012-12-04 | 2013-01-08 | T18P108107C0 |  |  |  |  | 72.65d | 49.25d | IRONMONGERY [870 h]; IRONMONGERY [87 no]; Cost |  |  | T18P108709C0 | PT | C | 18 | P1 | DO | 087 | 09 |  | BILL 10 | B10 | S2 | IM | R00 | ACF06 |  | 087 | 322 | 951 | 08 |  |  |  |
| T18P101006C0 |  | PT-18 ; 2nd, Ceiling Inspection by Consultants (PAT RM-1) | 5.25d | 2012-12-11 | 2012-12-17 | T18P121115C0, T18P123009C0, T18P123015C0, T18P127002C0, T18P109501C0, T18P121113C0, T18P123019C0, T18P126015C0, T18P126017C0, T18P126003C0, T18P127030C0 |  |  |  |  | 36.15d | 12.75d | Labor General [1.2 h]; Cost |  |  | T18P101006C0 | PT | C | 18 | P1 | ME | 010 | 06 | 2n | BILL 10 | B10 | S2 | CI | R00 | ACF07 | MEP | 010 |  |  |  |  |  |  |
| T18P122029C0 |  | PT-18 ; Final Fix, Medical Gas pipe (PAT RM-1) | 18d | 2012-12-25 | 2013-01-16 | T18P109501C0, T18P106102C0 |  |  |  |  | 53.4d | 30d | PLUMBING [1149.6 h]; Cost |  |  | T18P122029C0 | PT | C | 18 | P1 | ME | 220 | 29 | FF | BILL 10 | B10 | S2 | FF | R00 | ACF07 | MEP | 220 |  |  |  |  |  |  |
| T18P109503C0 |  | PT-18 ; Ceiling closure - ACT/Gypsum (PAT RM-1) | 24d | 2013-01-02 | 2013-01-31 | T18P101006C0, T18P109510C0, T18P121115C0, T18P126005C0, T18P127001C0, T18P127002C0, TAFOA09513C1 FF, T18P106101C0, T18P123021C0, T18P126007C0, T18P111071C0 |  |  |  |  | 23.4d | 0d | ASSORTED CEILING FINISH [549.81 h]; CEILING GYPSUM [136.74 h]; ASSORTED CEILING FINISH [894 m2]; CEILING GYPSUM [417 m2]; Cost |  |  | T18P109503C0 | PT | C | 18 | P1 | CE | 095 | 03 |  | BILL 10 | B10 | S2 | 02 | R00 | ACF06 |  | 095 | 324 | 953 |  |  |  |  |
| T18P111001C0 |  | PT-18 ; Wall Protection (WP, CG, WG, FCG) (PAT RM-1) | 24d | 2013-01-02 | 2013-01-31 | T18P109701C0, T18P109903C0 SS |  |  |  |  | 53.4d | 30d | FF&E [27 h]; Cost |  |  | T18P111001C0 | PT | C | 18 | P1 | WF | 110 | 01 |  | BILL 10 | B10 | S2 | 03 | R00 | ACF08 |  | b | 326 | 1001 |  |  |  |  |
| T18P109678C1 |  | PT-18, Carpet Tile Finish (Patient Room-1) | 0d | 2013-01-31 | 2013-01-31 | T18P109903C0 SS, T18P109907C0 SS |  |  |  |  | 53.4d | 30d | Cost |  |  |  | PT | C | 18 | P1 | FF | 096 |  |  |  | B10 |  |  | R00 | ACF06 | CPT | CPT |  |  |  |  |  |  |
| T18P109907C0 |  | PT-18 ; Ceiling Final paint (PAT RM-1) | 18d | 2013-01-31 | 2013-02-21 | T18P109601C0, T18P109905C0, T18P109503C0 |  |  |  |  | 35.4d | 0d | CEILING PAINT [20 h]; CEILING PAINT [23 m2]; Cost |  |  | T18P109907C0 | PT | C | 18 | P1 | PA | 099 | 07 |  | BILL 10 | B10 | S2 | 02 | R00 | ACF06 |  | 099 | 331 | 959 |  |  |  |  |
| T18P111003C0 |  | PT-18 ; FF & E (PAT RM-1) | 18d | 2013-01-31 | 2013-02-21 | T18P109601C0, T18P106101C0, T18P109503C0 |  |  |  |  | 35.4d | 12d | FF&E [1067 h]; Cost |  |  | T18P111003C0 | PT | C | 18 | P1 | WO | 110 | 03 |  | BILL 10 | B10 | S2 | 04 | R00 | ACF08 |  | a | 333 | 961 |  |  |  |  |
| T18P122027C0 |  | PT-18 ; Final Fix, Inst of All drain (PAT RM-1) | 18d | 2013-01-31 | 2013-02-21 | T18P109305C0, T18P109503C0 |  |  |  |  | 23.4d | 0d | PLUMBING [1378.8 h]; Cost |  |  | T18P122027C0 | PT | C | 18 | P1 | ME | 220 | 27 | FF | BILL 10 | B10 | S2 | FF | R00 | ACF07 | MEP | 220 |  |  |  |  |  |  |
| T18P126019C0 |  | PT-18 ; Final Fix, Inst of Switch/Sockets (PAT RM-1) | 18d | 2013-01-31 | 2013-02-21 | T18P109901C0, T18P109503C0 |  |  |  |  | 23.4d | 0d | ELECTRICAL [362.4 h]; Cost |  |  | T18P126019C0 | PT | C | 18 | P1 | ME | 260 | 19 | FF | BILL 10 | B10 | S2 | FF | R00 | ACF07 | MEP | 260 |  |  |  |  |  |  |
|  | 10 | **Precommissioning Tesing & snagging (PAT RM-1)** |  | 2013-02-21 | 2013-04-10 |  |  |  |  |  |  |  |  |  |  |  |  |  |  |  |  |  |  |  |  |  |  |  |  |  |  |  |  |  |  |  |  |  |
| T18TS01801C0 |  | PT-18 ; MEP de-snag, FIREM sign-off | 12d | 2013-02-21 | 2013-03-07 | T18P122025C0, T18P122027C0, T18P126015C0, T18P122021C0, T18P121113C0, T18P123019C0, T18P140303C0, T18P122029C0, T18P126017C0, T18P126003C0, T18P127030C0, T18P126019C0 |  |  |  |  | 23.4d | 0d | TESTING & COMMISSIONING [2040 h]; Cost |  |  | T18TS01801C0 | PT | C | 18 | TS | SC | 018 | 01 |  | BILL 10 | B10 | S2 | 01 | R00 | ACF07 |  | 018 |  |  |  |  |  |  |
| T18TS01806C0 |  | PT-18 ; Touch-up & Clean / JV inspection /CIR /De-snag | 18d | 2013-03-07 | 2013-03-28 | T18P105501C0, T18P105511C0, T18P106101C0, T18P106102C0, T18P108709C0, T18P109305C0, T18P109601C0, T18P109701C0, T18P109903C0, T18P109907C0, T18P111001C0, T18P111003C0, T18P111071C0, T18TS01801C0, T18P109503C0, T18P109678C1, T18P209688C1 |  |  |  |  | 23.4d | 3.75d | TESTING & COMMISSIONING [128 h]; Cost |  |  | T18TS01802C0 | PT | C | 18 | TS | SC | 018 | 02 |  | BILL 10 | B10 | S2 | 02 | R00 | ACF07 |  | 018 |  |  |  |  |  |  |
| T18TS01809C0 |  | PT-18 ; Consultant's final de-snag inspection | 7d | 2013-04-02 | 2013-04-10 | T18TS01806C0, T18TS01810C0, T16TS01816C0 |  |  |  |  | 19.65d | 4d | Labor General [1 h]; Cost |  |  | T18TS01803C0 | PT | C | 18 | TS | SC | 018 | 03 |  | BILL 10 | B10 | S2 | 03 | R00 | ACF07 |  | 018 |  |  |  |  |  |  |
|  | 03 | **PAT RM-2** |  | 2011-09-05 | 2013-04-01 |  |  |  |  |  |  |  |  |  |  |  |  |  |  |  |  |  |  |  |  |  |  |  |  |  |  |  |  |  |  |  |  |  |
| T18P223001C0 |  | PT-18 ; 1st Fix, Inst. of Supports for MEP (PAT RM-2) | 36d | 2011-09-05 A | 2011-11-15 | T18CO07807C0 | 10% | 32.4d | 2011-09-27 | 2011-11-10 | 31.25d | 0d | MECHANICAL [800.4 h]; Cost [45150.4 AED] | 45,150.38 | 4,515.04 | T18P223001C0 | PT | C | 18 | P2 | ME | 230 | 01 | 1S | BILL 10 | B10 | S2 | 1F | R00 | ACF04 | MEP | 230 |  |  |  | M1F |  |  |
| T18P226001C0 |  | PT-18 ; 1st Fix, Inst of Trunking/Conduiting (PAT RM-2) | 48d | 2011-09-05 A | 2012-01-11 | T18CO07807C0, T18P223001C0 | 5% | 45.6d | 2011-11-12 | 2012-01-09 | 31.25d | 0d | ELECTRICAL [734.4 h]; Cost [37790.1 AED] | 37,790.1 | 1,889.5 | T18P226001C0 | PT | C | 18 | P2 | ME | 260 | 01 | 1S | BILL 10 | B10 | S2 | 1F | R00 | ACF04 | MEP | 260 |  |  |  | M1F |  |  |
| T18P226009C0 |  | PT-18 ; 2nd Fix, Inst of Wall conduites (PAT RM-2) | 42d | 2011-09-05 A | 2012-03-31 | T18P209201C0 | 5% | 39.9d | 2012-01-21 | 2012-03-11 | 34.88d | 2.1d | ELECTRICAL [734.4 h]; Cost [37790.1 AED] | 37,790.1 | 1,889.5 | T18P226009C0 | PT | C | 18 | P2 | ME | 260 | 09 | 2n | BILL 10 | B10 | S2 | 2F | R00 | ACF07 | MEP | 260 |  |  |  |  |  |  |
| T18P227010C0 |  | PT-18 ; 1st Fix, Inst of Trunking for ELV system (PAT RM-2) | 48d | 2011-11-16 | 2012-01-14 | T18CO07807C0, T18P223001C0, T18P226001C0 SS+9d |  |  |  |  | 31.25d | 0d | ELECTRICAL [1512 h]; Cost |  |  | T18P227010C0 | PT | C | 18 | P2 | ME | 270 | 10 | 1S | BILL 10 | B10 | S2 | 1F | R00 | ACF04 | MEP | 270 |  |  |  | M1F |  |  |
| T18P226013C0 |  | PT-18 ; 1st Fix, Inst of Cable Tray (PAT RM-2) | 48d | 2011-11-28 | 2012-01-24 | T18CO07807C0, T18P223001C0, T18P227010C0 SS+9d |  |  |  |  | 31.25d | 0d | ELECTRICAL [399.6 h]; Cost |  |  | T18P226013C0 | PT | C | 18 | P2 | ME | 260 | 13 | 1S | BILL 10 | B10 | S2 | 1F | R00 | ACF04 | MEP | 260 |  |  |  | M1F |  |  |
| T18P222019C0 |  | PT-18 ; 1st Fix, Inst of Drainage pipe (ceiling) (PAT RM-2) | 48d | 2011-12-10 | 2012-02-05 | T18P223001C0, T18P226013C0 SS+9d |  |  |  |  | 31.25d | 0d | PLUMBING [1378.8 h]; Cost |  |  | T18P222019C0 | PT | C | 18 | P2 | ME | 220 | 19 | 1S | BILL 10 | B10 | S2 | 1F | R00 | ACF04 | MEP | 220 |  |  |  | M1F | 0 |  |
| T18P209702C0 |  | PT-18 ; Installation of Bathroom Pods (PAT RM-2) | 0d | 2011-12-11 | 2011-12-11 | T18P109702C0 SS, T18CO07807C0, AAFCI09201R02 FS+118d |  |  |  |  | 176.25d | 143.47d | Cost |  |  | T10P109701C0 | PT | C | 18 | P2 | BP | 097 | 01 |  | BILL 10 | B10 | S2 | FG | R00 | ACF06 |  | 097 | 105 | 1002 |  |  |  |  |
| T18P222005C0 |  | PT-18 ; 1st Fix, Inst of Water supply pipe (ceiling) (PAT RM-2) | 60d | 2011-12-20 | 2012-02-29 | T18P222019C0 SS+9d, T18P223001C0 |  |  |  |  | 31.25d | 0d | PLUMBING [4548 h]; Cost |  |  | T18P222005C0 | PT | C | 18 | P2 | ME | 220 | 05 | 1S | BILL 10 | B10 | S2 | 1F | R00 | ACF04 | MEP | 220 |  |  |  | M1F |  |  |
| T18P209201C0 |  | PT-18 ; Metal Studs (PAT RM-2) | 42d | 2011-12-24 | 2012-02-13 | T18P223001C0, T18CO04407C0 FF, T18CO04405C0 FF |  |  |  |  | 20.65d | 0d | PARTITIONS [2367 h]; PARTITIONS - Metal Studs [328 m]; Cost |  |  | T18P209201C0 | PT | C | 18 | P2 | PT | 092 | 01 |  | BILL 10 | B10 | S2 | 1F | R00 | ACF06 | GP | 092 | 313 | 944 |  | PMS |  |  |
| T18P221111C0 |  | PT-18 ; 1st Fix, Inst of Sprinkler main pipe (PAT RM-2) | 48d | 2011-12-31 | 2012-02-26 | T18P222005C0 SS+9d, T18P223001C0 |  |  |  |  | 31.25d | 0d | MECHANICAL [853.2 h]; Cost |  |  | T18P221111C0 | PT | C | 18 | P2 | ME | 211 | 11 | 1S | BILL 10 | B10 | S2 | 1F | R00 | ACF04 | MEP | 211 |  |  |  | M1F |  |  |
| T18P222007C0 |  | PT-18 ; 1st Fix, Inst of Medical Gas pipe (PAT RM-2) | 48d | 2012-01-11 | 2012-03-07 | T18P221111C0 SS+9d, T18P223001C0 |  |  |  |  | 60.38d | 27.6d | PLUMBING [1149.6 h]; Cost |  |  | T18P222007C0 | PT | C | 18 | P2 | ME | 220 | 07 | 1S | BILL 10 | B10 | S2 | 1F | R00 | ACF04 | MEP | 220 |  |  |  | M1F | 0 |  |
| T18P227001C0 |  | PT-18 ; 1st Fix, Wiring/ Cabling work (PAT RM-2) | 48d | 2012-01-25 | 2012-03-21 | T18P226001C0, T18P226013C0, T18P227010C0 |  |  |  |  | 120.25d | 99.6d | ELECTRICAL [392.4 h]; Cost |  |  | T18P227001C0 | PT | C | 18 | P2 | ME | 270 | 01 | 1S | BILL 10 | B10 | S2 | 1F | R00 | ACF04 | MEP | 270 |  |  |  | M1F |  |  |
| T18P223017C0 |  | PT-18 ; 1st Fix, Inst of CHW pipe (PAT RM-2) | 54d | 2012-01-29 | 2012-04-02 | T18P221111C0 SS+14d, T18P223001C0, T18P205503C0 FF+18d |  |  |  |  | 20.65d | 0d | MECHANICAL [2467.2 h]; Cost |  |  | T18P223017C0 | PT | C | 18 | P2 | ME | 230 | 17 | 1S | BILL 10 | B10 | S2 | 1F | R00 | ACF04 | MEP | 230 |  |  |  | M1F |  |  |
| T18P223023C0 |  | PT-18 ; 1st Fix, Inst of Main Ducting (PAT RM-2) | 60d | 2012-02-11 | 2012-04-21 | T18P223001C0, T18P223017C0 SS+10d |  |  |  |  | 46.65d | 0d | MECHANICAL [8022 h]; Cost |  |  | T18P223023C0 | PT | C | 18 | P2 | ME | 230 | 23 | 1S | BILL 10 | B10 | S2 | 1F | R00 | ACF04 | MEP | 230 |  |  |  | M1F |  |  |
| T18P205503C0 |  | PT-18 ; Ceiling Support for medical equipment (PAT RM-2) | 24d | 2012-02-13 | 2012-03-12 | T18P209201C0, TAFCI22001R20 FS+65d |  |  |  |  | 20.65d | 0d | SECONDARY STEEL [72 h]; STRUCTURAL STEEL [15 T(Fe)]; Cost |  |  | D03EY05503C0 | PT | C | 18 | P2 | SW | 055 | 03 |  | BILL 10 | B10 | S2 | 03 | R00 | ACF03 |  | b | 335 | 962 |  |  |  |  |
| T18P205511C0 |  | PT-18 ; Wall reinforcement for MEP/Medical (PAT RM-2) | 24d | 2012-02-13 | 2012-03-12 | T18P209201C0, TAFCI22001R02 FS+65d |  |  |  |  | 56.65d | 23.88d | SECONDARY STEEL [31 h]; Cost |  |  | T18P205511C0 | PT | C | 18 | P2 | SW | 055 | 11 |  | BILL 10 | B10 | S2 | 03 | R00 | ACF03 |  | b |  |  |  |  |  |  |
| T18P208103C0 |  | PT-18 ; Door Frames (PAT RM-2) | 36d | 2012-02-13 | 2012-03-26 | T18P209201C0, GNHE08101C0 FS+126d |  |  |  |  | 45.4d | 0d | ASSORTED DOORS [215 h]; Cost |  |  | T18P208103C0 | PT | C | 18 | P2 | DO | 081 | 03 |  | BILL 10 | B10 | S2 | DF | R00 | ACF06 |  | 081 | 316 | 947 | 08 |  |  |  |
| T18P209203C0 |  | PT-18 ; Partitions 1st face (PAT RM-2) | 42d | 2012-02-13 | 2012-04-02 | T18P209201C0 |  |  |  |  | 38.65d | 5.88d | PARTITIONS [328 m]; PARTITIONS [1854 h]; Cost |  |  | T18P209203C0 | PT | C | 18 | P2 | PT | 092 | 03 |  | BILL 10 | B10 | S2 | 2F | R00 | ACF06 | GP | 092 | 314 | 945 |  | P1F |  |  |
| T18P222011C0 |  | PT-18 ; 2nd Fix, Drainage/Water pipe (wall) (PAT RM-2) | 42d | 2012-02-13 | 2012-04-02 | T18P209201C0 |  |  |  |  | 32.77d | 0d | PLUMBING [1378.8 h]; Cost |  |  | T18P222011C0 | PT | C | 18 | P2 | ME | 220 | 11 | 2n | BILL 10 | B10 | S2 | 2F | R00 | ACF07 | MEP | 220 |  |  |  |  |  |  |
| T18P222015C0 |  | PT-18 ; 2nd Fix, Medical Gas pipe (PAT RM-2) | 42d | 2012-02-13 | 2012-04-02 | T18P209201C0, T18P222007C0 SS |  |  |  |  | 32.77d | 0d | PLUMBING [1149.6 h]; Cost |  |  | T18P222015C0 | PT | C | 18 | P2 | ME | 220 | 15 | 2n | BILL 10 | B10 | S2 | 2F | R00 | ACF07 | MEP | 220 |  |  |  |  |  |  |
| T18P221117C0 |  | PT-18 ; 1st Fix, Inst of Sprinkler branch pipe (PAT RM-2) | 48d | 2012-02-27 | 2012-04-22 | T18P209201C0, T18P221111C0, T18P205503C0 FF+18d |  |  |  |  | 93.25d | 72.6d | MECHANICAL [561.6 h]; Cost |  |  | T18P221117C0 | PT | C | 18 | P2 | ME | 211 | 17 | 1S | BILL 10 | B10 | S2 | 1F | R00 | ACF04 | MEP | 211 |  |  |  | M1F |  |  |
| T18P201005C0 |  | PT-18 ; 2nd, Wall Inspection by Consultant (PAT RM-2) | 5.88d | 2012-04-02 | 2012-04-09 | T18P222011C0, T18P222015C0, T18P226009C0 |  |  |  |  | 32.77d | 0d | Labor General [1.2 h]; Cost |  |  | T18P201005C0 | PT | C | 18 | P2 | ME | 010 | 05 | 2n | BILL 10 | B10 | S2 | WI | R00 | ACF07 | MEP | 010 |  |  |  |  |  |  |
| T18P223009C0 |  | PT-18 ; 2nd Fix, Inst of VAV'S CHW connection (PAT RM-2) | 42d | 2012-04-02 | 2012-05-21 | T18P223017C0 |  |  |  |  | 20.65d | 0d | MECHANICAL [1450.8 h]; Cost |  |  | T18P223009C0 | PT | C | 18 | P2 | ME | 230 | 09 | 2n | BILL 10 | B10 | S2 | 2F | R00 | ACF07 | MEP | 230 |  |  |  |  |  |  |
| T18P209205C0 |  | PT-18 ; Partitions Closing (PAT RM-2) | 42d | 2012-04-09 | 2012-05-28 | T18P201005C0, T18P205511C0, T18P209203C0, T18P222005C0, T18P222019C0, TAFOA09214C1 FF, T18P209702C0 FF, T18P208103C0 FF |  |  |  |  | 32.77d | 0d | PARTITIONS [328 m]; PARTITIONS [2369 h]; Cost |  |  | T18P209205C0 | PT | C | 18 | P2 | PT | 092 | 05 |  | BILL 10 | B10 | S2 | FF | R00 | ACF06 | GP | 092 | 315 | 946 |  | P2F |  |  |
| T18P223008C0 |  | PT-18 ; 1st Fix, Inst of VCD's/FD's (PAT RM-2) | 48d | 2012-04-21 | 2012-06-17 | T18P223023C0, T18P205503C0 FF+18d |  |  |  |  | 46.65d | 26d | MECHANICAL [1753.2 h]; Cost |  |  | T18P223008C0 | PT | C | 18 | P2 | ME | 230 | 08 | 1S | BILL 10 | B10 | S2 | 1F | R00 | ACF04 | MEP | 230 |  |  |  | M1F |  |  |
| T18P223015C0 |  | PT-18 ; 2nd Fix, Insulation of CHW pipe & Duct (PAT RM-2) | 48d | 2012-05-21 | 2012-07-17 | T18P223009C0, T18P223017C0, T18P223023C0 |  |  |  |  | 20.65d | 0d | MECHANICAL [3064.8 h]; Cost |  |  | T18P223015C0 | PT | C | 18 | P2 | ME | 230 | 15 | 2n | BILL 10 | B10 | S2 | 2F | R00 | ACF07 | MEP | 230 |  |  |  |  |  |  |
| T18P207103C0 |  | PT-18 ; Waterproofing (PAT RM-2) | 11.88d | 2012-05-28 | 2012-06-11 | T18P208103C0, T18P209205C0 |  |  |  |  | 136.65d | 66.25d | THERMAL & MOISTURE [384 h]; THERMAL & MOISTURE [2509 m2]; Cost |  |  | T18P207103C0 | PT | C | 18 | P2 | FF | 071 | 03 |  | BILL 10 | B10 | S2 | 01 | R00 | ACF03 |  | 071 | 105 | 999 |  |  |  |  |
| T18P209901C0 |  | PT-18 ; Wall Prime & 1st coat (PAT RM-2) | 30d | 2012-05-28 | 2012-07-03 | T18P209205C0 |  |  |  |  | 32.77d | 0d | WALL PAINT [415 h]; WALL PAINT [517 m2]; Cost |  |  | T18P209901C0 | PT | C | 18 | P2 | PA | 099 | 01 |  | BILL 10 | B10 | S2 | 01 | R00 | ACF06 |  | 099 | 328 | 956 |  |  |  |  |
| T18P226005C0 |  | PT-18 ; 2nd Fix, Wiring for Power/Lighting/Emergency (PAT RM-2) | 42d | 2012-05-28 | 2012-07-17 | T18P209205C0 |  |  |  |  | 118.03d | 0d | ELECTRICAL [392.4 h]; Cost |  |  | T18P226005C0 | PT | C | 18 | P2 | ME | 260 | 05 | 2n | BILL 10 | B10 | S2 | 2F | R00 | ACF07 | MEP | 260 |  |  |  |  |  |  |
| T18P226007C0 |  | PT-18 ; 2nd Fix, Cable Pulling (PAT RM-2) | 48d | 2012-05-28 | 2012-07-24 | T18P209201C0 SS+6d, T18P209205C0 |  |  |  |  | 152.78d | 132.12d | ELECTRICAL [2683.2 h]; Cost |  |  | T18P226007C0 | PT | C | 18 | P2 | ME | 260 | 07 | 2n | BILL 10 | B10 | S2 | 2F | R00 | ACF07 | MEP | 260 |  |  |  |  |  |  |
| T18P226011C0 |  | PT-18 ; 2nd Fix, Inst of Equipment (DB) (PAT RM-2) | 54d | 2012-05-28 | 2012-07-31 | T18P209205C0 |  |  |  |  | 136.53d | 90.12d | ELECTRICAL [878.4 h]; Cost |  |  | T18P226011C0 | PT | C | 18 | P2 | ME | 260 | 11 | 2n | BILL 10 | B10 | S2 | 2F | R00 | ACF04 | MEP | 260 |  |  |  |  |  | E |
| T18P226053C0 |  | PT-18 ; 2nd Fix, Wiring / Cabling (PAT RM-2) | 42d | 2012-05-28 | 2012-07-17 | T18P209203C0, T18P209205C0 |  |  |  |  | 56.77d | 36.12d | ELECTRICAL [392.4 h]; Cost |  |  | T18P226053C0 | PT | C | 18 | P2 | ME | 260 | 53 | 2n | BILL 10 | B10 | S2 | 2F | R00 | ACF07 | MEP | 260 | 389 | 977 |  |  |  |  |
| T18P205501C0 |  | PT-18 ; Handrails & balustrade (PAT RM-2) | 35.5d | 2012-07-03 | 2012-08-13 | T18P209901C0 |  |  |  |  | 75.28d | 54.62d | SECONDARY STEEL [174 h]; Cost |  |  | T18P205501C0 | PT | C | 18 | P2 | SW | 055 | 01 |  | BILL 10 | B10 | S2 | 01 | R00 | ACF03 |  | a |  |  |  |  |  |  |
| T18P226015C0 |  | PT-18 ; Final Fix, Termination & Gladding of Cables (PAT RM-2) | 36d | 2012-07-17 | 2012-08-30 | T18P226005C0 |  |  |  |  | 118.03d | 84.12d | ELECTRICAL [148.8 h]; Cost |  |  | T18P226015C0 | PT | C | 18 | P2 | ME | 260 | 15 | FF | BILL 10 | B10 | S2 | FF | R00 | ACF07 | MEP | 260 |  |  |  |  |  |  |
| T18P209501C0 |  | PT-18 ; Ceiling Grid and Service Tile (PAT RM-2) | 36d | 2012-07-17 | 2012-08-30 | T18P205503C0, T18P209205C0 SS+15d, T18P221117C0, T18P223008C0, T18P223009C0, T18P223015C0, T18P227001C0, T18P226053C0 FF, T18P209901C0 |  |  |  |  | 20.65d | 0d | CEILING GRID FOR GYPSUM [3691.46 h]; CEILING GRID FOR GYPSUM [315.76 m2]; Cost |  |  | T18P209501C0 | PT | C | 18 | P2 | CE | 095 | 01 |  | BILL 10 | B10 | S2 | 01 | R00 | ACF06 |  | 095 | 323 | 952 |  |  |  |  |
| T18P209510C0 |  | PT-18 ; Patient Lift Ceiling Rail (by others) (PAT RM-2) | 30d | 2012-07-17 | 2012-08-23 | T18P209501C0 SS |  |  |  |  | 128.65d | 108d | Labor General [0.2 h]; Cost |  |  | I06P109501C0 | PT | C | 18 | P2 | CE | 095 | 10 |  | BILL 10 | B10 | S2 | 02 | R00 | ACF06 |  | 095 | 323 | 952 |  |  |  |  |
| T18P209305C0 |  | PT-18 ; Flooring (Terrazzo) (PAT RM-2) | 42d | 2012-08-30 | 2012-10-18 | T18P207103C0, T18P209501C0 |  |  |  |  | 70.4d | 0d | TERRAZO FLOOR [1085 m2]; TERRAZO FLOOR [1960 h]; Cost |  |  | T18P209305C0 | PT | C | 18 | P2 | FF | 096 | 05 |  | BILL 10 | B10 | S2 | 07 | R00 | ACF06 |  | TZ | 106 | 1000 |  |  |  |  |
| T18P209601C0 |  | PT-18 ; Flooring (Rubber & etc) (PAT RM-2) | 42d | 2012-08-30 | 2012-10-18 | T18P209501C0, T18P205501C0 FF |  |  |  |  | 20.65d | 0d | RUBBER FLOOR [32 h]; RUBBER FLOOR [77 m2]; Cost |  |  | T18P209601C0 | PT | C | 18 | P2 | FF | 096 | 01 |  | BILL 10 | B10 | S2 | 03 | R00 | ACF06 |  | RF | 326 | 955 |  |  |  |  |
| T18P209905C0 |  | PT-18 ; Ceiling Prime & 1st coat (PAT RM-2) | 30d | 2012-08-30 | 2012-10-04 | T18P209501C0 |  |  |  |  | 112.4d | 0d | CEILING PAINT [28 h]; CEILING PAINT [33 m2]; Cost |  |  | T18P209905C0 | PT | C | 18 | P2 | PA | 099 | 05 |  | BILL 10 | B10 | S2 | 01 | R00 | ACF06 |  | 099 | 330 | 958 |  |  |  |  |
| T18P221115C0 |  | PT-18 ; 2nd Fix, Inst of Sprinkler droppers (PAT RM-2) | 42d | 2012-08-30 | 2012-10-18 | T18P209501C0 |  |  |  |  | 39.9d | 0d | MECHANICAL [1602 h]; Cost |  |  | T18P221115C0 | PT | C | 18 | P2 | ME | 211 | 15 | 2n | BILL 10 | B10 | S2 | 2F | R00 | ACF07 | MEP | 211 |  |  |  |  |  |  |
| T18P223021C0 |  | PT-18 ; 2nd Fix, Inst of Flexible Duct & Plenum boxes (PAT RM-2) | 42d | 2012-08-30 | 2012-10-18 | T18P209205C0, T18P209501C0 |  |  |  |  | 39.9d | 0d | MECHANICAL [30 h]; Cost |  |  | T18P223021C0 | PT | C | 18 | P2 | ME | 230 | 21 | 2n | BILL 10 | B10 | S2 | 2F | R00 | ACF07 | MEP | 230 |  |  |  |  |  |  |
| T18P226017C0 |  | PT-18 ; Final Fix, Inst of Ceiling rose (PAT RM-2) | 36d | 2012-08-30 | 2012-10-11 | T18P209501C0 |  |  |  |  | 33.9d | 0d | ELECTRICAL [61.2 h]; Cost |  |  | T18P226017C0 | PT | C | 18 | P2 | ME | 260 | 17 | FF | BILL 10 | B10 | S2 | FF | R00 | ACF07 | MEP | 260 |  |  |  |  |  |  |
| T18P227002C0 |  | PT-18 ; 2nd Fix, Wiring Droppers (PAT RM-2) | 42d | 2012-08-30 | 2012-10-18 | T18P209501C0 |  |  |  |  | 33.9d | 0d | ELECTRICAL [392.4 h]; Cost |  |  | T18P227002C0 | PT | C | 18 | P2 | ME | 270 | 02 | 2n | BILL 10 | B10 | S2 | 2F | R00 | ACF07 | MEP | 270 |  |  |  |  |  |  |
| T18P227020C0 |  | PT-18 ; 2nd Fix, Inst of ELV Equipment (Panels) (PAT RM-2) | 66d | 2012-08-30 | 2012-11-19 | T18P209205C0, T18P209501C0 |  |  |  |  | 46.4d | 0d | ELECTRICAL [1819.2 h]; Cost |  |  | T18P227020C0 | PT | C | 18 | P2 | ME | 270 | 20 | 2n | BILL 10 | B10 | S2 | 2F | R00 | ACF04 | MEP | 270 |  |  |  |  |  | E |
| T18P240303C0 |  | PT-18 ; Final Fix, Pneumatic Station (PAT RM-2) | 36d | 2012-08-30 | 2012-10-11 | T18P209501C0 |  |  |  |  | 124.4d | 103.75d | MECHANICAL [2974.8 h]; Cost |  |  | T18P240303C0 | PT | C | 18 | P2 | ME | 403 | 03 | FF | BILL 10 | B10 | S2 | FF | R00 | ACF07 | MEP | 403 |  |  |  |  |  |  |
| T18P209903C0 |  | PT-18 ; Wall Final Paint (PAT RM-2) | 30d | 2012-10-04 | 2012-11-11 | T18P209901C0, T18P209905C0, T18P209501C0 |  |  |  |  | 112.4d | 72d | WALL PAINT [225 h]; WALL PAINT [279 m2]; Cost |  |  | T18P209903C0 | PT | C | 18 | P2 | PA | 099 | 03 |  | BILL 10 | B10 | S2 | 02 | R00 | ACF06 |  | 099 | 329 | 957 |  |  |  |  |
| T18P226003C0 |  | PT-18 ; Final Fix, Inst of Light fittings (PAT RM-2) | 48d | 2012-10-11 | 2012-12-11 | T18P209501C0, T18P226017C0 |  |  |  |  | 33.9d | 0d | ELECTRICAL [7815.6 h]; Cost |  |  | T18P226003C0 | PT | C | 18 | P2 | ME | 260 | 03 | FF | BILL 10 | B10 | S2 | FF | R00 | ACF07 | MEP | 260 |  |  |  |  |  |  |
| T18P206101C0 |  | PT-18 ; Wood / caseworks (PAT RM-2) | 60d | 2012-10-18 | 2013-01-02 | T18CO04407C0, T18P209501C0, T18P209601C0, T18P209901C0, TAFWA00101M0 |  |  |  |  | 20.65d | 0d | WOOD WORK/CASEWORK [659.26 no]; WOOD WORK/CASEWORK [1445 h]; Cost |  |  | T18P206101C0 | PT | C | 18 | P2 | WO | 061 | 01 |  | BILL 10 | B10 | S2 | WW | R00 | ACF06 |  | 061 | 332 | 960 |  |  |  |  |
| T18P206102C0 |  | PT-18 ; Head/Foot Wall (PAT RM-2) | 60d | 2012-10-18 | 2013-01-02 | T18CO04407C0, T18P209501C0, TAFWA00101M0, T18P206101C0 SS |  |  |  |  | 40.4d | 0d | WOOD WORK/CASEWORK [1649 h]; Cost |  |  | T18P206102C0 | PT | C | 18 | P2 | WO | 061 | 02 |  | BILL 10 | B10 | S2 | WW | R00 | ACF06 |  | 061 | 332 | 960 |  |  |  |  |
| T18P208107C0 |  | PT-18 ; Doors (PAT RM-2) | 36d | 2012-10-18 | 2012-12-04 | T18P208103C0, T18P209501C0, T18P209601C0, T18P209901C0 |  |  |  |  | 66.9d | 0d | ASSORTED DOORS [430 h]; ASSORTED DOORS [43 no]; Cost |  |  | T18P208107C0 | PT | C | 18 | P2 | DO | 081 | 07 |  | BILL 10 | B10 | S2 | DR | R00 | ACF06 |  | 081 | 317 | 948 | 08 |  |  |  |

| ID | WBS | Activity | Duration | Start | Finish | Predecessors | Total float | Free float | Resources | Change Order # | NEW ACTIVITY ID | change id | CCAD BUILDING(SET) | CCAD PHASE(SET) | CCAD FLOOR(SET) | CCAD ZONE(SET) | CCAD WORK(SET) | CCAD SECTION(SET) | CCAD SERIAL No.(SET) | CCAD CBS(SET) | CCAD BILL(SET) | CCAD HANDOVER(SET) | CCAD TAG(SET) | CCAD REV(SET) | CCADACF (SET) | CCAD CSA | CCAD SSCF | CCAD SUB ZONE MEP(SET) | CCAD DIVISION(SET) | U% | Act Selector % | CCAD MEQ | IDDD |
| --- | --- | --- | --- | --- | --- | --- | --- | --- | --- | --- | --- | --- | --- | --- | --- | --- | --- | --- | --- | --- | --- | --- | --- | --- | --- | --- | --- | --- | --- | --- | --- | --- | --- |
| T18P211071C0 |  | PT-18 ; Food Service Equipment (PAT RM-2) | 60d | 2012-10-18 | 2013-01-02 | T18P209601C0 | 20.65d | 0d | FF&E [2805 h]; Cost | 313 | 944 | T18P211071C0 | PT | C | 18 | P2 | EQ | 110 | 71 | BILL 10 | B10 | S2 | 06 | R00 | ACF08 | FK | KE |  |  |  |  |  |  |
| T18P221113C0 |  | PT-18 ; Final Fix, Inst of Sprinklers head/ Extinguisher (PAT RM-2) | 36d | 2012-10-18 | 2012-12-04 | T18P209501C0, T18P221115C0 | 39.9d | 6d | MECHANICAL [234 h]; Cost |  |  | T18P221113C0 | PT | C | 18 | P2 | ME | 211 | 13 | BILL 10 | B10 | S2 | FF | R00 | ACF07 | MEP | 211 | FF |  |  |  |  |  |
| T18P222025C0 |  | PT-18 ; Final Fix, Inst of Sanitary Ware (PAT RM-2) | 42d | 2012-10-18 | 2012-12-11 | T18P209205C0, T18P209305C0 | 70.4d | 0d | PLUMBING [3361.2 h]; Cost |  |  | T18P222025C0 | PT | C | 18 | P2 | ME | 220 | 25 | BILL 10 | B10 | S2 | FF | R00 | ACF07 | MEP | 220 | FF |  |  |  |  |  |
| T18P223019C0 |  | PT-18 ; Final Fix, Inst of Grilles & Diffusers (PAT RM-2) | 36d | 2012-10-18 | 2012-12-04 | T18P209501C0, T18P223021C0 | 39.9d | 6d | MECHANICAL [1498.8 h]; Cost |  |  | T18P223019C0 | PT | C | 18 | P2 | ME | 230 | 19 | BILL 10 | B10 | S2 | FF | R00 | ACF07 | MEP | 230 | FF |  |  |  |  |  |
| T18P227030C0 |  | PT-18 ; Final Fix, Inst of ELV device (Detector/Speaker) (PAT RM-2) | 42d | 2012-10-18 | 2012-12-11 | T18P209501C0, T18P227002C0 | 33.9d | 0d | ELECTRICAL [3571.2 h]; Cost |  |  | T18P227030C0 | PT | C | 18 | P2 | ME | 270 | 30 | BILL 10 | B10 | S2 | FF | R00 | ACF07 | MEP | 270 | FF |  |  |  |  |  |
| T18P222021C0 |  | PT-18 ; Final Fix, Terminate Sanitary Ware & Appliances (PAT RM-2) | 42d | 2012-10-25 | 2012-12-18 | T18P222011C0, T18P222025C0 SS+6d | 70.4d | 49.75d | PLUMBING [3361.2 h]; Cost |  |  | T18P222021C0 | PT | C | 18 | P2 | ME | 220 | 21 | BILL 10 | B10 | S2 | FF | R00 | ACF07 | MEP | 220 | FF |  |  |  |  |  |
| T18P209701C0 |  | PT-18 ; Wall finishes (ST, WD, WC) (PAT RM-2) | 36d | 2012-11-19 | 2013-01-02 | T18P226011C0, T18P227020C0, T18P209501C0, T18P209601C0, T18P209305C0 | 46.4d | 0d | ASSORTED WALL FINISH [369 h]; ASSORTED WALL FINISH [423 m2]; Cost | 105 | 1002 | T18P209701C0 | PT | C | 18 | P2 | WF | 097 | 01 | BILL 10 | B10 | S2 | 01 | R00 | ACF06 |  | 097 |  |  |  |  |  |  |
| T18P208709C0 |  | PT-18 ; Ironmongery (PAT RM-2) | 27.5d | 2012-12-04 | 2013-01-07 | T18P208107C0 | 66.9d | 46.25d | IRONMONGERY [610 h]; IRONMONGERY [61 no]; Cost | 322 | 951 | T18P208709C0 | PT | C | 18 | P2 | DO | 087 | 09 | BILL 10 | B10 | S2 | IM | R00 | ACF06 |  | 087 |  | 08 |  |  |  |  |
| T18P201006C0 |  | PT-18 ; 2nd, Ceiling Inspection by Consultants (PAT RM-2) | 4.75d | 2012-12-11 | 2012-12-17 | T18P221115C0, T18P223009C0, T18P223015C0, T18P227002C0, T18P209501C0, T18P221113C0, T18P223019C0, T18P226015C0, T18P226017C0, T18P226003C0, T18P227030C0 | 33.9d | 13.25d | Labor General [1.2 h]; Cost |  |  | T18P201006C0 | PT | C | 18 | P2 | ME | 010 | 06 | BILL 10 | B10 | S2 | CI | R00 | ACF07 | MEP | 010 | 2n |  |  |  |  |  |
| T18P209503C0 |  | PT-18 ; Ceiling closure - ACT/Gypsum (PAT RM-2) | 19.75d | 2013-01-02 | 2013-01-27 | T18P201006C0, T18P209510C0, T18P221115C0, T18P226005C0, T18P227001C0, T18P227002C0, TAFOA09513C1 FF, T18P206101C0, T18P223021C0, T18P226007C0, T18P211071C0 | 20.65d | 0d | ASSORTED CEILING FINISH [416.36 h]; CEILING GYPSUM [103.53 h]; ASSORTED CEILING FINISH [677 m2]; CEILING GYPSUM [316 m2]; Cost | 324 | 953 | T18P209503C0 | PT | C | 18 | P2 | CE | 095 | 03 | BILL 10 | B10 | S2 | 02 | R00 | ACF06 |  | 095 |  |  |  |  |  |  |
| T18P211001C0 |  | PT-18 ; Wall Protection (WP, CG, WG, FCG) (PAT RM-2) | 24d | 2013-01-02 | 2013-01-31 | T18P209701C0, T18P209903C0 SS | 46.4d | 25.75d | FF&E [18 h]; Cost | 326 | 1001 | T18P211001C0 | PT | C | 18 | P2 | WF | 110 | 01 | BILL 10 | B10 | S2 | 03 | R00 | ACF08 |  | b |  |  |  |  |  |  |
| T18P222029C0 |  | PT-18 ; Final Fix, Medical Gas pipe (PAT RM-2) | 18d | 2013-01-02 | 2013-01-23 | T18P209501C0, T18P206102C0 | 40.4d | 19.75d | PLUMBING [1149.6 h]; Cost |  |  | T18P222029C0 | PT | C | 18 | P2 | ME | 220 | 29 | BILL 10 | B10 | S2 | FF | R00 | ACF07 | MEP | 220 | FF |  |  |  |  |  |
| T18P209688C1 |  | PT-18, Carpet Tile Finish (Patient Room-2) | 0d | 2013-01-27 | 2013-01-27 | T18P209903C0 SS, T18P209907C0 SS | 57.65d | 34.25d | Cost |  |  |  | PT | C | 18 | P2 | FF | 096 |  |  | B10 |  |  | R00 | ACF06 | CPT | CPT |  |  |  |  |  |  |
| T18P209907C0 |  | PT-18 ; Ceiling Final paint (PAT RM-2) | 18d | 2013-01-27 | 2013-02-17 | T18P209601C0, T18P209905C0, T18P209503C0 | 32.65d | 0d | CEILING PAINT [15 h]; CEILING PAINT [18 m2]; Cost | 331 | 959 | T18P209907C0 | PT | C | 18 | P2 | PA | 099 | 07 | BILL 10 | B10 | S2 | 02 | R00 | ACF06 |  | 099 |  |  |  |  |  |  |
| T18P211003C0 |  | PT-18 ; FF & E (PAT RM-2) | 18d | 2013-01-27 | 2013-02-17 | T18P209601C0, T18P206101C0, T18P209503C0 | 32.65d | 12d | FF&E [715 h]; Cost | 333 | 961 | T18P211003C0 | PT | C | 18 | P2 | WO | 110 | 03 | BILL 10 | B10 | S2 | 04 | R00 | ACF08 |  | a |  |  |  |  |  |  |
| T18P222027C0 |  | PT-18 ; Final Fix, Inst of All drain (PAT RM-2) | 18d | 2013-01-27 | 2013-02-17 | T18P209305C0, T18P209503C0 | 20.65d | 0d | PLUMBING [1378.8 h]; Cost |  |  | T18P222027C0 | PT | C | 18 | P2 | ME | 220 | 27 | BILL 10 | B10 | S2 | FF | R00 | ACF07 | MEP | 220 | FF |  | 0 |  |  |  |
| T18P226019C0 |  | PT-18 ; Final Fix, Inst of Switch/Sockets (PAT RM-2) | 18d | 2013-01-27 | 2013-02-17 | T18P209901C0, T18P209503C0 | 20.65d | 0d | ELECTRICAL [362.4 h]; Cost |  |  | T18P226019C0 | PT | C | 18 | P2 | ME | 260 | 19 | BILL 10 | B10 | S2 | FF | R00 | ACF07 | MEP | 260 | FF |  |  |  |  |  |
|  | 10 | **Precommissioning Tesing & snagging (PAT RM-2)** |  | 2013-02-17 | 2013-04-01 |  |  |  |  |  |  |  |  |  |  |  |  |  |  |  |  |  |  |  |  |  |  |  |  |  |  |  |  |
| T18TS01804C0 |  | PT-18 ; MEP de-snag, FIREM sign-off | 12d | 2013-02-17 | 2013-03-03 | T18P222025C0, T18P222027C0, T18P226015C0, T18P222021C0, T18P221113C0, T18P223019C0, T18P240303C0, T18P222029C0, T18P226017C0, T18P226003C0, T18P227030C0, T18P226019C0 | 20.65d | 0d | TESTING & COMMISSIONING [510 h]; Cost |  |  | T18TS01801C0 | PT | C | 18 | TS | SC | 018 | 01 | BILL 10 | B10 | S2 | 01 | R00 | ACF07 |  | 018 |  |  |  |  |  |  |
| T18TS01807C0 |  | PT-18 ; Touch-up & Clean / JV inspection /CIR /De-snag | 18d | 2013-03-03 | 2013-03-24 | T18P205501C0, T18P206101C0, T18P206102C0, T18P207103C0, T18P208709C0, T18P209305C0, T18P209601C0, T18P209701C0, T18P209903C0, T18P209907C0, T18P211001C0, T18P211003C0, T18P211071C0, T18TS01804C0, T18P209503C0 | 20.65d | 0d | TESTING & COMMISSIONING [128 h]; Cost |  |  | T18TS01802C0 | PT | C | 18 | TS | SC | 018 | 02 | BILL 10 | B10 | S2 | 02 | R00 | ACF07 |  | 018 |  |  |  |  |  |  |
| T18TS01810C0 |  | PT-18 ; Consultant's final de-snag inspection | 7d | 2013-03-24 | 2013-04-01 | T18TS01807C0, T18TS01811C0 | 20.65d | 1d | Labor General [1 h]; Cost |  |  | T18TS01803C0 | PT | C | 18 | TS | SC | 018 | 03 | BILL 10 | B10 | S2 | 03 | R00 | ACF07 |  | 018 |  |  |  |  |  |  |
|  | 05 | **TR Room** |  | 2011-10-22 | 2013-02-04 |  |  |  |  |  |  |  |  |  |  |  |  |  |  |  |  |  |  |  |  |  |  |  |  |  |  |  |  |
| T18TR09201C0 |  | PT-18 ; Metal Studs (TR RM) | 18d | 2011-10-22 | 2011-11-14 | T18PA09201C0 SS | 92.5d | 0d | PARTITIONS [231 h]; PARTITIONS - Metal Studs [32 m]; Cost | 313 | 885 | T18TR09201C0 | PT | C | 18 | TR | PT | 092 | 01 | BILL 10 | B10 | S2 | 1F | R00 | ACF06 | GP | 092 |  |  |  | PMS |  |  |
| T18TR09203C0 |  | PT-18 ; Partitions 1st face (TR RM) | 24d | 2011-11-15 | 2011-12-14 | T18TR09201C0 | 110.5d | 85.6d | PARTITIONS [32 m]; PARTITIONS [177 h]; Cost | 314 | 886 | T18TR09203C0 | PT | C | 18 | TR | PT | 092 | 03 | BILL 10 | B10 | S2 | 2F | R00 | ACF06 | GP | 092 |  |  |  | P1F |  |  |
| T18TR26026C0 |  | PT-18 ; 2nd Fix, Conduit (TR RM) | 30d | 2011-11-15 | 2011-12-21 | T18TR09201C0 | 92.5d | 0d | ELECTRICAL [734.4 h]; Cost |  |  | T18TR26026C0 | PT | C | 18 | TR | ME | 260 | 26 | BILL 10 | B10 | S2 | 2F | R00 | ACF07 | MEP | 260 | 2n |  |  |  |  |  |
| T18TR01005C0 |  | PT-18 ; 2nd, Wall Inspection by Consultant (TR RM) | 12d | 2011-12-22 | 2012-01-05 | T18TR26026C0 | 92.5d | 67.6d | Labor General [1.2 h]; Cost |  |  | T18TR01005C0 | PT | C | 18 | TR | ME | 010 | 05 | BILL 10 | B10 | S2 | WI | R00 | ACF07 | MEP | 010 | 2n |  |  |  |  |  |
| T18TR08101C0 |  | PT-18 ; Door Frames (TR RM) | 18d | 2011-12-28 | 2012-01-18 | T18TR09201C0, GNHE08101C0 FS+126d | 111.5d | 86.6d | ASSORTED DOORS [19 h]; Cost | 316 | 20001090 | T18TR08101C0 | PT | C | 18 | TR | DO | 081 | 01 | BILL 10 | B10 | S2 | DF | R00 | ACF06 |  | 081 |  | 08 |  |  |  |  |
| T18TR09205C0 |  | PT-18 ; Partitions Closing (TR RM) | 30d | 2012-03-26 | 2012-04-30 | T18TR01005C0, T18TR09201C0, T18TR09203C0, TAFOA09214C1 FF, T18TR08101C0 FF, T18PA09205C0 SS | 24.9d | 0d | PARTITIONS [32 m]; PARTITIONS [235 h]; Cost | 315 | 887 | T18TR09205C0 | PT | C | 18 | TR | PT | 092 | 05 | BILL 10 | B10 | S2 | FF | R00 | ACF06 | GP | 092 |  |  |  | P2F |  |  |
| T18TR09901C0 |  | PT-18 ; Wall Prime & 1st coat (TR RM) | 18d | 2012-04-30 | 2012-05-21 | T18TR09205C0 | 24.9d | 0d | WALL PAINT [37 h]; WALL PAINT [45 m2]; Cost | 360 | 20001110 | T18TR09901C0 | PT | C | 18 | TR | PA | 099 | 01 | BILL 10 | B10 | S2 | 01 | R00 | ACF06 |  | 099 |  |  |  |  |  |  |
| T18TR23009C0 |  | PT-18 ; 2nd Fix, Inst of VAV'S CHW connection (TR RM) | 36d | 2012-04-30 | 2012-06-11 | T18TR09205C0 | 85.03d | 0d | MECHANICAL [1450.8 h]; Cost |  |  | T18TR23009C0 | PT | C | 18 | TR | ME | 230 | 09 | BILL 10 | B10 | S2 | 2F | R00 | ACF07 | MEP | 230 | 2n |  |  |  |  |  |
| T18TR23011C0 |  | PT-18 ; 2nd Fix, Inst of VCD's/FD's (TR RM) | 36d | 2012-04-30 | 2012-06-11 | T18TR09205C0 | 85.03d | 0d | MECHANICAL [1753.2 h]; Cost |  |  | T18TR23011C0 | PT | C | 18 | TR | ME | 230 | 11 | BILL 10 | B10 | S2 | 2F | R00 | ACF07 | MEP | 230 | 2n |  |  |  |  |  |
| T18TR26005C0 |  | PT-18 ; 2nd Fix, Wiring for Power/Lighting/Emergency (TR RM) | 30d | 2012-04-30 | 2012-06-04 | T18TR09205C0, T18TR26026C0 | 150.9d | 126d | ELECTRICAL [392.4 h]; Cost |  |  | T18TR26005C0 | PT | C | 18 | TR | ME | 260 | 05 | BILL 10 | B10 | S2 | 2F | R00 | ACF07 | MEP | 260 | 2n |  |  |  |  |  |
| T18TR26007C0 |  | PT-18 ; 2nd Fix, Cable Pulling (TR RM) | 36d | 2012-04-30 | 2012-06-11 | T18TR09203C0, T18TR09205C0 | 133.03d | 48d | ELECTRICAL [2683.2 h]; Cost |  |  | T18TR26007C0 | PT | C | 18 | TR | ME | 260 | 07 | BILL 10 | B10 | S2 | 2F | R00 | ACF07 | MEP | 260 | 2n |  |  |  |  |  |
| T18TR26009C0 |  | PT-18 ; 2nd Fix, Inst of Equipment (DB, TR, SG,BUS) (TR RM) | 54d | 2012-04-30 | 2012-07-03 | T18TR09205C0 | 96.9d | 0d | ELECTRICAL [3943.2 h]; Cost |  |  | T18TR26009C0 | PT | C | 18 | TR | ME | 260 | 09 | BILL 10 | B10 | S2 | 2F | R00 | ACF04 | MEP | 260 | 2n |  |  |  | E |  |
| T18TR26027C0 |  | PT-18 ; 2nd Fix, Wiring / Cabling (TR RM) | 30d | 2012-04-30 | 2012-06-04 | T18TR09203C0, T18TR09205C0 | 150.9d | 126d | ELECTRICAL [392.4 h]; Cost | 417 | 1318 | T18TR26027C0 | PT | C | 18 | TR | ME | 260 | 27 | BILL 10 | B10 | S2 | 2F | R00 | ACF07 | MEP | 260 | 2n |  |  |  |  |  |
| T18TR09501C0 |  | PT-18 ; Ceiling Grid and Service Tile (TR RM) | 24d | 2012-05-21 | 2012-06-19 | T18TR09205C0 SS+15d, T18TR09901C0 | 24.9d | 0d | CEILING GRID FOR GYPSUM [297.07 h]; CEILING GRID FOR GYPSUM [25.26 m2]; Cost | 336 | 1327 | T18TR09501C0 | PT | C | 18 | TR | CE | 095 | 01 | BILL 10 | B10 | S2 | 01 | R00 | ACF06 |  | 095 |  |  |  |  |  | 1 |
| T18TR09903C0 |  | PT-18 ; Wall - Final Paint (TR RM) | 12d | 2012-05-21 | 2012-06-04 | T18TR09901C0 | 194.9d | 170d | WALL PAINT [20 h]; WALL PAINT [24 m2]; Cost | 361 | 1312 | T18TR09903C0 | PT | C | 18 | TR | PA | 099 | 03 | BILL 10 | B10 | S2 | 02 | R00 | ACF06 |  | 099 |  |  |  |  |  |  |
| T18TR23013C0 |  | PT-18 ; 2nd Fix, Insulation of CHW pipe & Duct (TR RM) | 48d | 2012-06-11 | 2012-08-07 | T18TR23009C0, T18TR23011C0 | 85.03d | 0d | MECHANICAL [3064.8 h]; Cost |  |  | T18TR23013C0 | PT | C | 18 | TR | ME | 230 | 13 | BILL 10 | B10 | S2 | 2F | R00 | ACF07 | MEP | 230 | 2n |  |  |  |  |  |
| T18TR09601C0 |  | PT-18 ; Floor Finishes (TR RM) | 18d | 2012-06-19 | 2012-07-10 | T18TR09501C0 | 84.9d | 0d | ASSORTED FLOOR FINISH [1248 h]; ASSORTED FLOOR FINISH [693 m2]; Cost | 359 | 20001120 | T18TR09601C0 | PT | C | 18 | TR | FF | 096 | 01 | BILL 10 | B10 | S2 | 01 | R00 | ACF06 |  | FF |  |  |  |  |  |  |
| T18TR09905C0 |  | PT-18 ; Ceiling Prime & 1st coat (TR RM) | 18d | 2012-06-19 | 2012-07-10 | T18TR09501C0 | 152.9d | 110d | CEILING PAINT [4 h]; CEILING PAINT [3 m2]; Cost | 362 | 1313 | T18TR09905C0 | PT | C | 18 | TR | PA | 099 | 05 | BILL 10 | B10 | S2 | 01 | R00 | ACF06 |  | 099 |  |  |  |  |  |  |
| T18TR23003C0 |  | PT-18 ; Final Fix, Inst of Grilles & Diffusers (TR RM) | 30d | 2012-06-19 | 2012-07-24 | T18TR09501C0 | 108.9d | 84d | MECHANICAL [1498.8 h]; Cost |  |  | T18TR23003C0 | PT | C | 18 | TR | ME | 230 | 03 | BILL 10 | B10 | S2 | FF | R00 | ACF07 | MEP | 230 | FF |  |  |  |  |  |
| T18TR23023C0 |  | PT-18 ; 2nd Fix, Flexible ducts (TR RM) | 30d | 2012-06-19 | 2012-07-24 | T18TR09205C0, T18TR09501C0 | 108.9d | 84d | MECHANICAL [30 h]; Cost | 412 | 20001140 | T18TR23023C0 | PT | C | 18 | TR | ME | 230 | 23 | BILL 10 | B10 | S2 | 2F | R00 | ACF07 | MEP | 230 | 2n |  |  |  |  |  |
| T18TR23074C0 |  | PT-18 ; Final Fix, Grilles, panels & diffusers (TR RM) | 30d | 2012-06-19 | 2012-07-24 | T18TR09501C0 | 108.9d | 84d | MECHANICAL [1498.8 h]; Cost | 419 | 20001160 | T18TR23074C0 | PT | C | 18 | TR | ME | 230 | 74 | BILL 10 | B10 | S2 | FF | R00 | ACF07 | MEP | 230 | FF |  |  |  |  |  |
| T18TR26015C0 |  | PT-18 ; Final Fix, Inst of Ceiling rose (TR RM) | 30d | 2012-06-19 | 2012-07-24 | T18TR09501C0 | 108.9d | 84d | ELECTRICAL [61.2 h]; Cost |  |  | T18TR26015C0 | PT | C | 18 | TR | ME | 260 | 15 | BILL 10 | B10 | S2 | FF | R00 | ACF07 | MEP | 260 | FF |  |  |  |  |  |
| T18TR26019C0 |  | PT-18 ; Final Fix, Inst of Light fittings (TR RM) | 36d | 2012-06-19 | 2012-07-31 | T18TR09501C0 | 102.9d | 78d | ELECTRICAL [7815.6 h]; Cost |  |  | T18TR26019C0 | PT | C | 18 | TR | ME | 260 | 19 | BILL 10 | B10 | S2 | FF | R00 | ACF07 | MEP | 260 | FF |  |  |  |  |  |
| T18TR26076C0 |  | PT-18 ; Final Fix, Lighting fittings (TR RM) | 36d | 2012-06-19 | 2012-07-31 | T18TR09501C0 | 102.9d | 78d | ELECTRICAL [7815.6 h]; Cost | 420 | 20001170 | T18TR26076C0 | PT | C | 18 | TR | ME | 260 | 76 | BILL 10 | B10 | S2 | FF | R00 | ACF07 | MEP | 260 | FF |  |  |  |  |  |
| T18TR27020C0 |  | PT-18 ; 2nd Fix, Inst of ELV Equipment (Panels) (TR RM) | 48d | 2012-06-19 | 2012-08-14 | T18TR09205C0, T18TR09501C0 | 24.9d | 0d | ELECTRICAL [1819.2 h]; Cost |  |  | T18TR27020C0 | PT | C | 18 | TR | ME | 270 | 20 | BILL 10 | B10 | S2 | 2F | R00 | ACF04 | MEP | 270 | 2n |  |  |  | E |  |
| T18TR26013C0 |  | PT-18 ; Final Fix, Termination & Gladding of Cables (TR RM) | 30d | 2012-07-03 | 2012-08-07 | T18TR26009C0, T18TR09501C0 | 96.9d | 72d | ELECTRICAL [148.8 h]; Cost |  |  | T18TR26013C0 | PT | C | 18 | TR | ME | 260 | 13 | BILL 10 | B10 | S2 | FF | R00 | ACF07 | MEP | 260 | FF |  |  |  |  |  |
| T18TR08105C0 |  | PT-18 ; Doors (TR RM) | 17.88d | 2012-07-10 | 2012-07-31 | T18TR08101C0, T18TR09501C0, T18TR09601C0, T18TR09901C0 | 131.03d | 0d | ASSORTED DOORS [40 h]; ASSORTED DOORS [4 no]; Cost | 317 | 1325 | T18TR08105C0 | PT | C | 18 | TR | DO | 081 | 05 | BILL 10 | B10 | S2 | DR | R00 | ACF06 |  | 081 |  | 08 |  |  |  |  |
| T18TR21115C0 |  | PT-18 ; 2nd Fix, Gaseous Fire Suppression (TR RM) | 36d | 2012-07-10 | 2012-08-23 | T18TR09601C0 | 84.9d | 60d | MECHANICAL [2626.8 h]; Cost | 411 | 20001130 | T18TR21115C0 | PT | C | 18 | TR | ME | 211 | 15 | BILL 10 | B10 | S2 | 2F | R00 | ACF07 | MEP | 211 | 2n |  |  |  |  |  |
| T18TR08709C0 |  | PT-18 ; Ironmongery (TR RM) | 16d | 2012-07-31 | 2012-08-21 | T18TR08105C0 | 131.03d | 106.12d | IRONMONGERY [50 h]; IRONMONGERY [5 no]; Cost | 322 | 20001100 | T18TR08709C0 | PT | C | 18 | TR | DO | 087 | 09 | BILL 10 | B10 | S2 | IM | R00 | ACF06 |  | 087 |  | 08 |  |  |  |  |
| T18TR01006C0 |  | PT-18 ; 2nd, Ceiling Inspection by Consultants (TR RM) | 11.88d | 2012-08-07 | 2012-08-23 | T18TR23009C0, T18TR23011C0, T18TR23013C0, T18TR26007C0, T18TR09501C0 | 85.03d | 60.12d | Labor General [1.2 h]; Cost |  |  | T18TR01006C0 | PT | C | 18 | TR | ME | 010 | 06 | BILL 10 | B10 | S2 | CI | R00 | ACF07 | MEP | 010 | 2n |  |  |  |  |  |
| T18TR27002C0 |  | PT-18 ; 2nd Fix, Dressing of ELV panels (TR RM) | 30d | 2012-08-14 | 2012-09-20 | T18TR09205C0, T18TR27020C0 | 24.9d | 0d | ELECTRICAL [273.6 h]; Cost |  |  | T18TR27002C0 | PT | C | 18 | TR | ME | 270 | 02 | BILL 10 | B10 | S2 | 2F | R00 | ACF07 | MEP | 270 | 2n |  |  |  |  |  |
| T18TR27030C0 |  | PT-18 ; Final Fix, Inst of ELV device (Detector/Speaker) (TR RM) | 36d | 2012-09-20 | 2012-11-04 | T18TR27002C0, T18TR09501C0 | 24.9d | 0d | ELECTRICAL [3571.2 h]; Cost |  |  | T18TR27030C0 | PT | C | 18 | TR | ME | 270 | 30 | BILL 10 | B10 | S2 | FF | R00 | ACF07 | MEP | 270 | FF |  |  |  |  |  |
| T18TR09503C0 |  | PT-18 ; Ceiling closure (TR RM) | 14d | 2012-11-04 | 2012-11-21 | T18TR01006C0, T18TR09501C0, T18TR21115C0, T18TR26005C0, T18TR26007C0, T18TR26026C0, T18TR26027C0, T18TR23074C0, T18TR23003C0, T18TR26076C0, T18TR26015C0, T18TR26013C0, T18TR26019C0, T18TR27030C0, T18TR23023C0 | 24.9d | 0d | ASSORTED CEILING FINISH [33.21 h]; CEILING GYPSUM [8.2 h]; ASSORTED CEILING FINISH [54 m2]; CEILING GYPSUM [25 m2]; Cost | 337 | 20001080 | T18TR09503C0 | PT | C | 18 | TR | CE | 095 | 03 | BILL 10 | B10 | S2 | 02 | R00 | ACF06 |  | 095 |  |  |  |  |  |  |
| T18TR09907C0 |  | PT-18 ; Ceiling - Final paint (TR RM) | 12d | 2012-11-21 | 2012-12-06 | T18TR09905C0, T18TR09503C0 | 42.9d | 18d | CEILING PAINT [2 h]; CEILING PAINT [1 m2]; Cost | 363 | 1314 | T18TR09907C0 | PT | C | 18 | TR | PA | 099 | 07 | BILL 10 | B10 | S2 | 02 | R00 | ACF06 |  | 099 |  |  |  |  |  |  |
| T18TR26017C0 |  | PT-18 ; Final Fix, Inst of Switch/Sockets (TR RM) | 12d | 2012-11-21 | 2012-12-06 | T18TR09901C0, T18TR09503C0 | 24.9d | 0d | ELECTRICAL [362.4 h]; Cost |  |  | T18TR26017C0 | PT | C | 18 | TR | ME | 260 | 17 | BILL 10 | B10 | S2 | FF | R00 | ACF07 | MEP | 260 | FF |  |  |  |  |  |
| T18TR01802C0 |  | PT-18 ; MEP de-snag, FIREM sign-off | 18d | 2012-12-06 | 2012-12-27 | T18TR26017C0, T18TR23074C0, T18TR23003C0, T18TR26076C0, T18TR26013C0, T18TR26015C0, T18TR26019C0, T18TR27030C0 | 24.9d | 0d | TESTING & COMMISSIONING [255 h]; Cost |  |  | S05CO01851C0 | PT | C | 18 | TR | SC | 018 | 53 | BILL 10 | B10 | S2 | 01 | R00 | ACF07 |  | 018 |  |  |  |  |  |  |
| T18TR01801C0 |  | PT-18 ; Touch-up & Clean / JV inspection /CIR /De-snag | 21d | 2012-12-27 | 2013-01-22 | T18TR01802C0, T18TR08709C0, T18TR09601C0, T18TR09903C0, T18TR09907C0, T18TR09503C0 | 24.9d | 0d | TESTING & COMMISSIONING [64 h]; Cost | 396 |  | T18TR01851C0 | PT | C | 18 | TR | SC | 018 | 51 | BILL 10 | B10 | S2 | 02 | R00 | ACF07 |  | 018 |  |  |  |  |  |  |
| T18TR01803C0 |  | PT-18 ; Consultant's final de-snag inspection | 9.5d | 2013-01-22 | 2013-02-04 | T18TR01801C0 | 24.9d | 0d | Labor General [1 h]; Cost |  |  | CP3TS01803C0 | PT | C | 18 | TR | SC | 018 | 03 | BILL 10 | B10 | S1 | 03 | R00 | ACF07 |  | 018 |  |  |  |  |  |  |

| ID | WBS | Activity | Duration | Start | Finish | Predecessors | Complete | Remaining | Planned start | Planned finish | Total float | Free float | Expected finish | Resources | Cost | Actual cost | change id | CCAD BUILDING(SET) | CCAD PHASE(SET) | CCAD FLOOR(SET) | CCAD ZONE(SET) | CCAD WORK(SET) | CCAD SECTION(SET) | CCAD SERIAL No.(SET) | CCAD SUB ZONE MEP(SET) | CCAD CBS(SET) | CCAD BILL(SET) | CCAD HANDOVER(SET) | CCAD TAG(SET) | CCAD REV(SET) | CCADACF (SET) | CCAD CSA | CCAD SSCF | U% | Act Selector % | Change Order # | NEW ACTIVITY ID | R3 Partitions | CCAD DIVISION(SET) | CCAD MEQ | R3 Finish |
| --- | --- | --- | --- | --- | --- | --- | --- | --- | --- | --- | --- | --- | --- | --- | --- | --- | --- | --- | --- | --- | --- | --- | --- | --- | --- | --- | --- | --- | --- | --- | --- | --- | --- | --- | --- | --- | --- | --- | --- | --- | --- |
|  | 04 | **Public Area ( Elev.Lobby & Corridors )** |  | 2011-09-05 | 2013-03-21 |  |  |  |  |  |  |  |  |  |  |  |  |  |  |  |  |  |  |  |  |  |  |  |  |  |  |  |  |  |  |  |  |  |  |  |  |
| T18PA26009C0 |  | PT-18 ; 2nd Fix, Inst of Wall conduites (Public Area) | 42d | 2011-09-05 A | 2012-01-17 | T18PA09201C0 | 5% | 39.9d | 2011-10-18 | 2011-12-11 | 76.72d | 2.1d |  | ELECTRICAL [734.4 h]; Cost [37790.1 AED] | 37,790.1 | 1,889.5 | S08PA26009C0 | PT | C | 18 | PA | ME | 260 | 09 | 2n | BILL 10 | B10 | S2 | 2F | R00 | ACF07 | MEP | 260 |  |  |  |  |  |  |  |  |
| T18PA23001C0 |  | PT-18 ; 1st Fix, Inst. of Supports for MEP (Public Area) | 36d | 2011-10-05 | 2011-11-20 | T18CO07807C0 |  |  |  |  | 22.9d | 0d |  | MECHANICAL [800.4 h]; Cost |  |  | S08PA23001C0 | PT | C | 18 | PA | ME | 230 | 01 | 1S | BILL 10 | B10 | S2 | 1F | R00 | ACF04 | MEP | 230 | 0 | M1F |  |  |  |  |  |  |
| T18PA09201C0 |  | PT-18 ; Metal Studs (Public Area) | 30d | 2011-10-22 | 2011-11-29 | T18PA23001C0 SS+12d, TAFCI09201R02 FS+58d, T18PA23001C0 FF |  |  |  |  | 74.62d | 0d |  | PARTITIONS [5687 h]; PARTITIONS - Metal Studs [789 m]; Cost |  |  | S08PA09201C0 | PT | C | 18 | PA | PT | 092 | 01 |  | BILL 10 | B10 | S2 | 1F | R00 | ACF06 | GP | 092 |  | PMS | 313 | 944 | R3 |  |  |  |
| T18PA09203C0 |  | PT-18 ; Partitions early wall & 1st face (Public Area) | 32.88d | 2011-11-30 | 2012-01-09 | T18PA09201C0 |  |  |  |  | 89.62d | 64.72d |  | PARTITIONS [789 m]; PARTITIONS [4449 h]; Cost |  |  | S08PA09203C0 | PT | C | 18 | PA | PT | 092 | 03 |  | BILL 10 | B10 | S2 | 2F | R00 | ACF06 | GP | 092 |  | P1F | 314 | 945 |  |  |  |  |
| T18PA22011C0 |  | PT-18 ; 2nd Fix, Drainage/Water pipe (wall) (Public Area) | 42d | 2011-11-30 | 2012-01-19 | T18PA09201C0 |  |  |  |  | 74.62d | 0d |  | PLUMBING [1378.8 h]; Cost |  |  | S08PA22011C0 | PT | C | 18 | PA | ME | 220 | 11 | 2n | BILL 10 | B10 | S2 | 2F | R00 | ACF07 | MEP | 220 | 0 |  |  |  |  |  |  |  |
| T18PA26013C0 |  | PT-18 ; 1st Fix, Inst of Cable Tray (Public Area) | 48d | 2011-12-20 | 2012-02-16 | T18CO07807C0, T18PA23001C0 |  |  |  |  | 22.9d | 0d |  | ELECTRICAL [399.6 h]; Cost |  |  | S08PA26013C0 | PT | C | 18 | PA | ME | 260 | 13 | 1S | BILL 10 | B10 | S2 | 1F | R00 | ACF04 | MEP | 260 |  | M1F |  |  |  |  |  |  |
| T18PA22019C0 |  | PT-18 ; 1st Fix, Inst of Drainage pipe (ceiling) (Public Area) | 54d | 2012-01-07 | 2012-03-11 | T18PA23001C0, T18PA26013C0 SS+14d |  |  |  |  | 22.9d | 0d |  | PLUMBING [2326.8 h]; Cost |  |  | S08PA22019C0 | PT | C | 18 | PA | ME | 220 | 19 | 1S | BILL 10 | B10 | S2 | 1F | R00 | ACF04 | MEP | 220 |  | M1F |  |  |  |  |  |  |
| T18PA22005C0 |  | PT-18 ; 1st Fix, Inst of Water supply pipe (ceiling) (Public Area) | 60d | 2012-01-15 | 2012-03-26 | T18PA22019C0 SS+7d, T18PA23001C0 |  |  |  |  | 22.9d | 0d |  | PLUMBING [4548 h]; Cost |  |  | S08PA22005C0 | PT | C | 18 | PA | ME | 220 | 05 | 1S | BILL 10 | B10 | S2 | 1F | R00 | ACF04 | MEP | 220 |  | M1F |  |  |  |  |  |  |
| T18PA01005C0 |  | PT-18 ; 2nd, Wall Inspection by Consultant (Public Area) | 5.88d | 2012-01-21 | 2012-01-26 | T18PA22011C0, T18PA26009C0 |  |  |  |  | 74.62d | 49.73d |  | Labor General [1.2 h]; Cost |  |  | S08PA01005C0 | PT | C | 18 | PA | ME | 010 | 05 | 2n | BILL 10 | B10 | S2 | WI | R00 | ACF07 | MEP | 010 |  |  |  |  |  |  |  |  |
| T18PA21111C0 |  | PT-18 ; 1st Fix, Inst of Sprinkler main pipe (Public Area) | 48d | 2012-01-29 | 2012-03-26 | PT-18 ; Final Fix, Inst of Spòinklers head/ Extifguisher (Publig Area) SS+12d, T18PA23001C0 |  |  |  |  | 22.9d | 0d |  | MECHANICAL [1236 h]; Cost |  |  | S08PA21111C0 | PT | C | 18 | PA | ME | 211 | 11 | 1S | BILL 10 | B10 | S2 | 1F | R00 | ACF04 | MEP | 211 |  | M1F |  |  |  |  |  |  |
| T18PA23017C0 |  | PT-18 ; 1st Fix, Inst of CHW pipe (Public Area) | 54d | 2012-02-15 | 2012-04-18 | T18PA21111C0 SS+14d, T18PA23001C0 |  |  |  |  | 22.9d | 0d |  | MECHANICAL [2467.2 h]; Cost |  |  | S08PA23017C0 | PT | C | 18 | PA | ME | 230 | 17 | 1S | BILL 10 | B10 | S2 | 1F | R00 | ACF04 | MEP | 230 |  | M1F |  |  |  |  |  |  |
| T18PA08103C0 |  | PT-18 ; Door Frames (Public Area) | 36d | 2012-02-16 | 2012-03-29 | T18PA09201C0, GNHE08101C0 FS+126d, T18P208103C0 SS+3d |  |  |  |  | 45.4d | 0d |  | ASSORTED DOORS [448 h]; Cost |  |  | S08PA08103C0 | PT | C | 18 | PA | DO | 081 | 03 |  | BILL 10 | B10 | S2 | DF | R00 | ACF06 |  | 081 |  |  | 316 | 947 |  | 08 |  |  |
| T18PA27001C0 |  | PT-18 ; 1st Fix, Wiring/ Cabling work (Public Area) | 48d | 2012-02-16 | 2012-04-12 | T18PA26013C0 |  |  |  |  | 117.9d | 95d |  | ELECTRICAL [392.4 h]; Cost |  |  | S08PA27001C0 | PT | C | 18 | PA | ME | 270 | 01 | 1S | BILL 10 | B10 | S2 | 1F | R00 | ACF04 | MEP | 270 |  | M1F |  |  |  |  |  |  |
| T18PA09205C0 |  | PT-18 ; Partitions Closing (Public Area) | 35.88d | 2012-03-26 | 2012-05-07 | T18PA01005C0, T18PA09203C0, PT-18 ; Final Fix, Inst of Spòinklers head/ Extifguisher (Publig Area), T18PA22019C0, TAFOA09214C1 FF, TAFCI22001R02 FS+65d, T18PA08103C0 FF |  |  |  |  | 24.9d | 0d |  | PARTITIONS [789 m]; PARTITIONS [5697 h]; Cost |  |  | S08PA09205C0 | PT | C | 18 | PA | PT | 092 | 05 |  | BILL 10 | B10 | S2 | FF | R00 | ACF06 | GP | 092 |  | P2F | 315 | 946 | R3 |  |  |  |
| T18PA21117C0 |  | PT-18 ; 1st Fix, Inst of Sprinkler branch pipe (Public Area) | 48d | 2012-03-26 | 2012-05-21 | T18PA09201C0, T18PA21111C0 |  |  |  |  | 84.9d | 62d |  | MECHANICAL [561.6 h]; Cost |  |  | S08PA21117C0 | PT | C | 18 | PA | ME | 211 | 17 | 1S | BILL 10 | B10 | S2 | 1F | R00 | ACF04 | MEP | 211 |  | M1F |  |  |  |  |  |  |
| T18PA23009C0 |  | PT-18 ; 2nd Fix, Inst of VAV'S CHW connection (Public Area) | 42d | 2012-04-18 | 2012-06-06 | T18PA23017C0 |  |  |  |  | 22.9d | 0d |  | MECHANICAL [1450.8 h]; Cost |  |  | S08PA23009C0 | PT | C | 18 | PA | ME | 230 | 09 | 2n | BILL 10 | B10 | S2 | 2F | R00 | ACF07 | MEP | 230 |  |  |  |  |  |  |  |  |
| T18PA09901C0 |  | PT-18 ; Wall Prime & 1st coat (Public Area) | 30d | 2012-05-07 | 2012-06-11 | T18PA09205C0 |  |  |  |  | 67.03d | 0d |  | WALL PAINT [866 h]; WALL PAINT [1080 m2]; Cost |  |  | S08PA09901C0 | PT | C | 18 | PA | PA | 099 | 01 |  | BILL 10 | B10 | S2 | 01 | R00 | ACF06 |  | 099 |  |  | 328 | 956 |  |  |  |  |
| T18PA26005C0 |  | PT-18 ; 2nd Fix, Wiring for Power/Lighting/Emergency (Public Area) | 42d | 2012-05-07 | 2012-06-26 | T18PA09205C0 |  |  |  |  | 127.03d | 0d |  | ELECTRICAL [392.4 h]; Cost |  |  | S08PA26005C0 | PT | C | 18 | PA | ME | 260 | 05 | 2n | BILL 10 | B10 | S2 | 2F | R00 | ACF07 | MEP | 260 |  |  |  |  |  |  |  |  |
| T18PA26007C0 |  | PT-18 ; 2nd Fix, Cable Pulling (Public Area) | 48d | 2012-05-07 | 2012-07-03 | T18PA09201C0 SS+6d, T18PA09205C0 |  |  |  |  | 161.78d | 138.88d |  | ELECTRICAL [2683.2 h]; Cost |  |  | S08PA26007C0 | PT | C | 18 | PA | ME | 260 | 07 | 2n | BILL 10 | B10 | S2 | 2F | R00 | ACF07 | MEP | 260 |  |  |  |  |  |  |  |  |
| T18PA26011C0 |  | PT-18 ; 2nd Fix, Inst of Equipment (DB) (Public Area) | 54d | 2012-05-07 | 2012-07-10 | T18PA09205C0 |  |  |  |  | 147.53d | 110.12d |  | ELECTRICAL [878.4 h]; Cost |  |  | S08PA26011C0 | PT | C | 18 | PA | ME | 260 | 11 | 2n | BILL 10 | B10 | S2 | 2F | R00 | ACF04 | MEP | 260 |  |  |  |  |  |  | E |  |
| T18PA26053C0 |  | PT-18 ; 2nd Fix, Wiring / Cabling (Public Area) | 42d | 2012-05-07 | 2012-06-26 | T18PA09203C0, T18PA09205C0 |  |  |  |  | 79.03d | 56.12d |  | ELECTRICAL [392.4 h]; Cost |  |  | S08PA26053C0 | PT | C | 18 | PA | ME | 260 | 53 | 2n | BILL 10 | B10 | S2 | 2F | R00 | ACF07 | MEP | 260 |  |  | 389 | 977 |  |  |  |  |
| T18PA23023C0 |  | PT-18 ; 1st Fix, Inst of Main Ducting (Public Area) | 60d | 2012-05-07 | 2012-02-27 | T18PA23001C0, T18PA23017C0 SS+10d |  |  | 2012-05-07 |  | 48.9d | 0d | 2012-02-27 | MECHANICAL [8022 h]; Cost |  |  | S08PA23023C0 | PT | C | 18 | PA | ME | 230 | 23 | 1S | BILL 10 | B10 | S2 | 1F | R00 | ACF04 | MEP | 230 |  | M1F |  |  |  |  |  |  |
| T18PA23015C0 |  | PT-18 ; 2nd Fix, Insulation of CHW pipe & Duct (Public Area) | 48d | 2012-06-06 | 2012-08-02 | T18PA23009C0, T18PA23017C0, T18PA23023C0 |  |  |  |  | 22.9d | 0d |  | MECHANICAL [3064.8 h]; Cost |  |  | S08PA23015C0 | PT | C | 18 | PA | ME | 230 | 15 | 2n | BILL 10 | B10 | S2 | 2F | R00 | ACF07 | MEP | 230 |  |  |  |  |  |  |  |  |
| T18PA05501C0 |  | PT-18 ; Handrails & balustrade (Public Area) | 35d | 2012-06-11 | 2012-07-23 | T18PA09901C0, TAFT105509C0, TAFT805509C0 |  |  |  |  | 100.03d | 33.12d |  | SECONDARY STEEL [356 h]; Cost |  |  | S08PA05501C0 | PT | C | 18 | PA | SW | 055 | 01 |  | BILL 10 | B10 | S2 | 01 | R00 | ACF03 |  | a |  |  |  |  |  |  |  |  |
| T18PA26015C0 |  | PT-18 ; Final Fix, Termination & Gladding of Cables (Public Area) | 36d | 2012-06-26 | 2012-08-07 | T18PA26005C0 |  |  |  |  | 127.03d | 104.12d |  | ELECTRICAL [148.8 h]; Cost |  |  | S08PA26015C0 | PT | C | 18 | PA | ME | 260 | 15 | FF | BILL 10 | B10 | S2 | FF | R00 | ACF07 | MEP | 260 |  |  |  |  |  |  |  |  |
| T18PA09501C0 |  | PT-18 ; Ceiling Grid and Service Tile (Public Area) | 24d | 2012-08-02 | 2012-09-02 | T18PA09205C0 SS+15d, T18PA21117C0, T18PA23009C0, T18PA23015C0, T18PA27001C0, TAFCI22002R02 FS+65d, T18PA26053C0 FF, T18PA09901C0 |  |  |  |  | 22.9d | 0d |  | CEILING GRID FOR GYPSUM [7543.63 h]; CEILING GRID FOR GYPSUM [645.55 m2]; Cost |  |  | S08PA09501C0 | PT | C | 18 | PA | CE | 095 | 01 |  | BILL 10 | B10 | S2 | 01 | R00 | ACF06 |  | 095 |  |  | 323 | 952 |  |  |  | R3 |
| T18PA09601C0 |  | PT-18 ; Flooring (Rubber & etc) (Public Area) | 30d | 2012-09-02 | 2012-10-07 | TAFCI22002R02 FS+65d, T18PA09501C0, T18PA05501C0 |  |  |  |  | 66.9d | 0d |  | RUBBER FLOOR [64 h]; RUBBER FLOOR [158 m2]; Cost |  |  | S08PA09601C0 | PT | C | 18 | PA | FF | 096 | 01 |  | BILL 10 | B10 | S2 | 03 | R00 | ACF06 |  | RF |  |  | 326 | 955 |  |  |  | R3 |
| T18PA09602C0 |  | PT-18 ; Flooring (Stone) (Public Area) | 30d | 2012-09-02 | 2012-10-07 | TAFCI22002R02 FS+65d, T18PA09501C0 |  |  |  |  | 66.9d | 0d |  | STONE FLOOR [28 m2]; STONE FLOOR [28 h]; Cost |  |  | S08PA09601C0 | PT | C | 18 | PA | FF | 096 | 01 |  | BILL 10 | B10 | S2 | 09 | R00 | ACF06 |  | ST |  |  | 326 | 955 |  |  |  | R3 |
| T18PA09905C0 |  | PT-18 ; Ceiling Prime & 1st coat (Public Area) | 30d | 2012-09-02 | 2012-10-07 | T18PA09501C0 |  |  |  |  | 103.4d | 0d |  | CEILING PAINT [55 h]; CEILING PAINT [67 m2]; Cost |  |  | S08PA09905C0 | PT | C | 18 | PA | PA | 099 | 05 |  | BILL 10 | B10 | S2 | 01 | R00 | ACF06 |  | 099 |  |  | 330 | 958 |  |  |  |  |
| T18PA21115C0 |  | PT-18 ; 2nd Fix, Inst of Sprinkler droppers (Public Area) | 42d | 2012-09-02 | 2012-10-21 | T18PA09501C0 |  |  |  |  | 28.9d | 0d |  | MECHANICAL [1602 h]; Cost |  |  | S08PA21115C0 | PT | C | 18 | PA | ME | 211 | 15 | 2n | BILL 10 | B10 | S2 | 2F | R00 | ACF07 | MEP | 211 |  |  |  |  |  |  |  |  |
| T18PA23021C0 |  | PT-18 ; 2nd Fix, Inst of Flexible Duct & Plenum boxes (Public Area) | 42d | 2012-09-02 | 2012-10-21 | T18PA09205C0, T18PA09501C0 |  |  |  |  | 28.9d | 0d |  | MECHANICAL [30 h]; Cost |  |  | S08PA23021C0 | PT | C | 18 | PA | ME | 230 | 21 | 2n | BILL 10 | B10 | S2 | 2F | R00 | ACF07 | MEP | 230 |  |  |  |  |  |  |  |  |
| T18PA26017C0 |  | PT-18 ; Final Fix, Inst of Ceiling rose (Public Area) | 36d | 2012-09-02 | 2012-10-14 | T18PA09501C0 |  |  |  |  | 22.9d | 0d |  | ELECTRICAL [61.2 h]; Cost |  |  | S08PA26017C0 | PT | C | 18 | PA | ME | 260 | 17 | FF | BILL 10 | B10 | S2 | FF | R00 | ACF07 | MEP | 260 |  |  |  |  |  |  |  |  |
| T18PA27002C0 |  | PT-18 ; 2nd Fix, Wiring Droppers (Public Area) | 42d | 2012-09-02 | 2012-10-21 | T18PA09501C0 |  |  |  |  | 22.9d | 0d |  | ELECTRICAL [392.4 h]; Cost |  |  | S08PA27002C0 | PT | C | 18 | PA | ME | 270 | 02 | 2n | BILL 10 | B10 | S2 | 2F | R00 | ACF07 | MEP | 270 |  |  |  |  |  |  |  |  |
| T18PA27020C0 |  | PT-18 ; 2nd Fix, Inst of ELV Equipment (Panels) (Public Area) | 66d | 2012-09-02 | 2012-11-21 | T18PA09205C0, T18PA09501C0 |  |  |  |  | 37.4d | 0d |  | ELECTRICAL [1819.2 h]; Cost |  |  | S08PA27020C0 | PT | C | 18 | PA | ME | 270 | 20 | 2n | BILL 10 | B10 | S2 | 2F | R00 | ACF04 | MEP | 270 |  |  |  |  |  |  | E |  |
| T18PA08107C0 |  | PT-18 ; Doors (Public Area) | 36d | 2012-10-07 | 2012-11-21 | T18PA08103C0, T18PA09501C0, T18PA09601C0, T18PA09901C0, T18PA09602C0 |  |  |  |  | 66.9d | 0d |  | ASSORTED DOORS [900 h]; ASSORTED DOORS [90 no]; Cost |  |  | S08PA08107C0 | PT | C | 18 | PA | DO | 081 | 07 |  | BILL 10 | B10 | S2 | DR | R00 | ACF06 |  | 081 |  |  | 317 | 948 |  | 08 |  |  |
| T18PA09903C0 |  | PT-18 ; Wall Final Paint (Public Area) | 30d | 2012-10-07 | 2012-11-13 | T18PA09901C0, T18PA09905C0, T18PA09501C0 |  |  |  |  | 103.4d | 72d |  | WALL PAINT [467 h]; WALL PAINT [581 m2]; Cost |  |  | S08PA09903C0 | PT | C | 18 | PA | PA | 099 | 03 |  | BILL 10 | B10 | S2 | 02 | R00 | ACF06 |  | 099 |  |  | 329 | 957 |  |  |  |  |
| T18PA26003C0 |  | PT-18 ; Final Fix, Inst of Light fittings (Public Area) | 48d | 2012-10-14 | 2012-12-13 | T18PA09501C0, T18PA26017C0 |  |  |  |  | 22.9d | 0d |  | ELECTRICAL [7815.6 h]; Cost |  |  | S08PA26003C0 | PT | C | 18 | PA | ME | 260 | 03 | FF | BILL 10 | B10 | S2 | FF | R00 | ACF07 | MEP | 260 |  |  |  |  |  |  |  |  |
| T18PA23019C0 |  | PT-18 ; Final Fix, Inst of Grilles & Diffusers (Public Area) | 36d | 2012-10-21 | 2012-12-06 | T18PA09501C0, T18PA23021C0 |  |  |  |  | 28.9d | 6d |  | MECHANICAL [1498.8 h]; Cost |  |  | S08PA23019C0 | PT | C | 18 | PA | ME | 230 | 19 | FF | BILL 10 | B10 | S2 | FF | R00 | ACF07 | MEP | 230 |  |  |  |  |  |  |  |  |
| T18PA27030C0 |  | PT-18 ; Final Fix, Inst of ELV devise (Detector/Speaker) (Public Area) | 42d | 2012-10-21 | 2012-12-13 | T18PA09501C0, T18PA27002C0 |  |  |  |  | 22.9d | 0d |  | ELECTRICAL [3571.2 h]; Cost |  |  | S08PA27030C0 | PT | C | 18 | PA | ME | 270 | 30 | FF | BILL 10 | B10 | S2 | FF | R00 | ACF07 | MEP | 270 |  |  |  |  |  |  |  |  |
| T18PA08709C0 |  | PT-18 ; Ironmongery (Public Area) | 30.5d | 2012-11-21 | 2012-12-29 | T18PA08107C0 |  |  |  |  | 66.9d | 44d |  | IRONMONGERY [1280 h]; IRONMONGERY [128 no]; Cost |  |  | S08PA08709C0 | PT | C | 18 | PA | DO | 087 | 09 |  | BILL 10 | B10 | S2 | IM | R00 | ACF06 |  | 087 |  |  | 322 | 951 |  | 08 |  |  |
| T18PA09701C0 |  | PT-18 ; Wall finishes (ST, WD, WC) (Public Area) | 36d | 2012-11-21 | 2013-01-05 | T18PA26011C0, T18PA27020C0, TVT0114211C0, TVT0214211C0, TAFCI22002R02 FS+164d, T18PA09501C0, T18PA09601C0, T18PA09602C0 |  |  |  |  | 37.4d | 0d |  | ASSORTED WALL FINISH [764 h]; ASSORTED WALL FINISH [878 m2]; Cost |  |  | S08PA09701C0 | PT | C | 18 | PA | WF | 097 | 01 |  | BILL 10 | B10 | S2 | 01 | R00 | ACF06 |  | 097 |  |  | 105 | 1002 |  |  |  |  |
| T18PA01006C0 |  | PT-18 ; 2nd, Ceiling Inspection by Consultants (Public Area) | 4.75d | 2012-12-13 | 2012-12-19 | T18PA21115C0, T18PA23009C0, T18PA23015C0, T18PA27002C0, T18PA09501C0, T18PA23019C0, T18PA26015C0, T18PA26017C0, T18PA26003C0, T18PA27030C0 |  |  |  |  | 22.9d | 0d |  | Labor General [1.2 h]; Cost |  |  | S08PA01006C0 | PT | C | 18 | PA | ME | 010 | 06 | 2n | BILL 10 | B10 | S2 | CI | R00 | ACF07 | MEP | 010 |  |  |  |  |  |  |  |  |
| T18PA09503C0 |  | PT-18 ; Ceiling closure - ACT/Gypsum (Public Area) | 21.75d | 2012-12-19 | 2013-01-15 | T18PA01006C0, T18PA21115C0, T18PA26005C0, T18PA27001C0, T18PA27002C0, TAFOA09513C1 FF, T18PA23021C0, T18PA26007C0 |  |  |  |  | 22.9d | 0d |  | ASSORTED CEILING FINISH [851.77 h]; CEILING GYPSUM [211.76 h]; ASSORTED CEILING FINISH [1385 m2]; CEILING GYPSUM [646 m2]; Cost |  |  | S08PA09503C0 | PT | C | 18 | PA | CE | 095 | 03 |  | BILL 10 | B10 | S2 | 02 | R00 | ACF06 |  | 095 |  |  | 324 | 953 |  |  |  | R3 |
| T18PA11001C0 |  | PT-18 ; Wall Protection (WP, CG, WG, FCG) (Public Area) | 24d | 2013-01-05 | 2013-02-03 | T18PA09701C0, PT-18 ; 0st Fix, Inst of Trunkinf/Konduitinç (Public Area) SS |  |  |  |  | 37.4d | 14.5d |  | FF&E [42 h]; Cost |  |  | S08PA11001C0 | PT | C | 18 | PA | WF | 110 | 01 |  | BILL 10 | B10 | S2 | 03 | R00 | ACF08 |  | b |  |  | 326 | 1001 |  |  |  |  |
| T18PA11009C0 |  | PT-18 ; Signage (Public Area) | 15d | 2013-01-05 | 2013-01-22 | T18PA09701C0 |  |  |  |  | 46.4d | 23.5d |  | SIGNAGES [173 h]; SIGNAGES [172.58 no]; Cost |  |  | S08PA11009C0 | PT | C | 18 | PA | SA | 110 | 09 |  | BILL 10 | B10 | S2 | 09 | R00 | ACF08 |  | c |  |  | 322 | 951 |  | 08 |  |  |
| T18PA09907C0 |  | PT-18 ; Ceiling Final paint (Public Area) | 18d | 2013-01-15 | 2013-02-06 | T18PA09601C0, T18PA09905C0, T18PA09602C0, T18PA09503C0 |  |  |  |  | 34.9d | 12d |  | CEILING PAINT [29 h]; CEILING PAINT [36 m2]; Cost |  |  | S08PA09907C0 | PT | C | 18 | PA | PA | 099 | 07 |  | BILL 10 | B10 | S2 | 02 | R00 | ACF06 |  | 099 |  |  | 331 | 959 |  |  |  |  |
| T18PA26019C0 |  | PT-18 ; Final Fix, Inst of Switch/Sockets (Public Area) | 18d | 2013-01-15 | 2013-02-06 | T18PA09901C0, T18PA09503C0 |  |  |  |  | 22.9d | 0d |  | ELECTRICAL [362.4 h]; Cost |  |  | S08PA26019C0 | PT | C | 18 | PA | ME | 260 | 19 | FF | BILL 10 | B10 | S2 | FF | R00 | ACF07 | MEP | 260 |  |  |  |  |  |  |  |  |
| PT-18 ; 0st Fix, Inst of Trunkinf/Konduitinç (Public Area) |  |  | 0d | 2019-11-20 | 2011-12-19 A | T18PA09901C0, T18PA09905C0, T18PA09501C0 |  |  | 2011-12-19 | 2012-02-29 | 0d | 6d |  | WALL PAINT [467 h]; WALL PAINT [581 m2]; Cost |  |  | S08PA09903C0 | PT | C | 18 | PA | PA | 099 | 03 |  | BILL 10 | B10 | S2 | 02 | R00 | ACF06 |  | 099 |  |  | 329 | 957 |  |  |  |  |
| PT-18 ; Final Fix, Inst of Spòinklers head/ Extifguisher (Publig Area) |  |  | 0d | 2092-10-21 | 2013-01-10 A | T18PA22019C0 SS+7d, T18PA23001C0 |  |  |  | 2013-01-10 | 7.25d | 36d | 2012-12-06 | PLUMBING [4548 h]; Cost |  |  | S08PA22005C0 | PT | C | 18 | PA | ME | 220 | 05 | 1S | BILL 10 | B10 | S2 | 1F | R00 | ACF04 | MEP | 220 |  | M1F |  |  |  |  |  |  |

| ID | WBS | Activity | Duration | Start | Finish | Predecessors | Complete | Remaining | Planned start | Planned finish | Total float | Free float | Constraint | Resources | change id | CCAD BUILDING(SET) | CCAD PHASE(SET) | CCAD FLOOR(SET) | CCAD ZONE(SET) | CCAD WORK(SET) | CCAD SECTION(SET) | CCAD SERIAL No.(SET) | CCAD CBS(SET) | CCAD BILL(SET) | CCAD HANDOVER(SET) | CCAD TAG(SET) | CCAD REV(SET) | CCADACF (SET) | CCAD SSCF | RENZ % COMPLETE | Phase | Area/ Department | Grids | Are | Weight & Nos | Process | Levels | Claimed This Month | CCAD CSA | P_811 | P_711 | U% | Change Order # | NEW ACTIVITY ID | CCAD DIVISION(SET) |
| --- | --- | --- | --- | --- | --- | --- | --- | --- | --- | --- | --- | --- | --- | --- | --- | --- | --- | --- | --- | --- | --- | --- | --- | --- | --- | --- | --- | --- | --- | --- | --- | --- | --- | --- | --- | --- | --- | --- | --- | --- | --- | --- | --- | --- | --- |
|  | 10 | **Precommissioning Tesing & snagging (Public Area)** |  | 2013-02-06 | 2013-03-21 |  |  |  |  |  |  |  |  |  |  |  |  |  |  |  |  |  |  |  |  |  |  |  |  |  |  |  |  |  |  |  |  |  |  |  |  |  |  |  |  |
| T18TS01805C0 |  | PT-18 ; MEP de-snag, FIREM sign-off | 12d | 2013-02-06 | 2013-02-20 | T18PA26015C0, T18PA23019C0, T18PA26017C0, T18PA26003C0, T18PA27030C0, T18PA26019C0 |  |  |  |  | 22.9d | 0d |  | TESTING & COMMISSIONING [510 h]; Cost | T18TS01801C0 | PT | C | 18 | TS | SC | 018 | 01 | BILL 10 | B10 | S2 | 01 | R00 | ACF07 | 018 |  |  |  |  |  |  |  |  |  |  |  |  |  |  |  |  |
| T18TS01808C0 |  | PT-18 ; Touch-up & Clean / JV inspection /CIR /De-snag | 18d | 2013-02-20 | 2013-03-13 | T18PA05501C0, T18PA08709C0, T18PA09601C0, T18PA09701C0, PT-18 ; 0st Fix, Inst of Trunkinf/Konduitinç (Public Area), T18PA09907C0, T18PA11001C0, T18PA11009C0, T18TS01805C0, T18PA09602C0, T18PA09503C0 |  |  |  |  | 22.9d | 0d |  | TESTING & COMMISSIONING [128 h]; Cost | T18TS01802C0 | PT | C | 18 | TS | SC | 018 | 02 | BILL 10 | B10 | S2 | 02 | R00 | ACF07 | 018 |  |  |  |  |  |  |  |  |  |  |  |  |  |  |  |  |
| T18TS01811C0 |  | PT-18 ; Consultant's final de-snag inspection | 7d | 2013-03-13 | 2013-03-21 | T18TS01808C0 |  |  |  |  | 22.9d | 2.25d |  | Labor General [1 h]; Cost | T18TS01803C0 | PT | C | 18 | TS | SC | 018 | 03 | BILL 10 | B10 | S2 | 03 | R00 | ACF07 | 018 |  |  |  |  |  |  |  |  |  |  |  |  |  |  |  |  |
|  | 19 | **Level 19** |  | 2011-04-04 | 2013-03-16 |  |  |  |  |  |  |  |  |  |  |  |  |  |  |  |  |  |  |  |  |  |  |  |  |  |  |  |  |  |  |  |  |  |  |  |  |  |  |  |  |
|  | 01 | **Structure & Envelopment** |  | 2011-04-04 | 2012-09-13 |  |  |  |  |  |  |  |  |  |  |  |  |  |  |  |  |  |  |  |  |  |  |  |  |  |  |  |  |  |  |  |  |  |  |  |  |  |  |  |  |
| T19SB03303C0 |  | PT-19 ; Corewall Concrete (Zone SB) | 3d | 2011-04-04 A | 2011-04-10 A | T18SB03303C0 | 100% |  | 2011-03-28 | 2011-03-30 |  |  |  | CONCRETE [6280 h]; CONCRETE [158 m3]; Cost | T19SB03303C0 | PT | C | 19 | SB | CT | 033 | 03 | BILL 10 | B10 | S2 | 04 | R00 | ACF03 | 033 | 100 | Z2 | PA | TRUS | D | A10 | EREC | 10FLR |  |  |  |  |  |  |  |  |
| T19SA03301C0 |  | PT-19 ; Corewall Concrete (Zone SA) | 3d | 2011-04-13 A | 2011-04-20 A | T18SA03301C0 | 100% |  | 2011-03-13 | 2011-03-16 |  |  |  | CONCRETE [6280 h]; CONCRETE [158 m3]; Cost | T19SA03301C0 | PT | C | 19 | SA | CT | 033 | 01 | BILL 10 | B10 | S2 | 04 | R00 | ACF03 | 033 | 100 | Z2 | PA | TRUS | D | A10 | EREC | 10FLR |  |  |  |  |  |  |  |  |
| T19CO05101C0 |  | PT-19 ; Erection of Structural Steel of 19 th Floor (Common Zone) | 5d | 2011-07-10 A | 2011-08-30 A | T18CO05103C0, T19SA03301C0, T19SB03303C0 | 100% |  | 2011-07-04 | 2011-07-10 |  |  |  | STRUCTURAL STEEL [9394 h]; STRUCTURAL STEEL [307 T(Fe)]; Cost | T19CO05101C0 | PT | C | 19 | CO | ST | 051 | 01 | BILL 10 | B10 | S2 | 01 | R00 | ACF03 | 051 |  | Z2 | PA | 10TH | E | A12A | EREC | 11FLR | 417202.53 | ST |  |  |  |  |  |  |
| T19CO05103C0 |  | PT-19 ; Alignment & welding of 19th Floor (Common Zone) | 3d | 2011-07-10 A | 2011-08-30 A | T19CO05101C0 | 100% |  | 2011-07-10 | 2011-07-13 |  |  |  | STRUCTURAL STEEL [1152 h]; Cost | T19CO05103C0 | PT | C | 19 | CO | ST | 051 | 03 | BILL 10 | B10 | S2 | 02 | R00 | ACF03 | 051 |  | Z2 | PA | 10TH | E | A12A | EREC | 11FLR |  | ST | 100 | 50 |  |  |  |  |
| T19CO05305C0 |  | PT-19 ; Metal Decking 19 FLR (Common Zone) | 10d | 2011-08-10 A | 2011-08-30 A | T19CO05103C0, T20CO05101C0, T18CO05305C0 FF+9d | 100% |  | 2011-08-09 | 2011-08-21 |  |  |  | METAL DECKING [2825 h]; METAL DECKING [3576 m2]; Cost | T19CO05305C0 | PT | C | 19 | CO | ST | 053 | 05 | BILL 10 | B10 | S2 | 03 | R00 | ACF03 | 053 |  | Z2 | PA | 10TH | E | A12A | MDEC | 11FLR |  | ST | 100 | 0 |  |  |  |  |
| T19CO03399C0 |  | PT-19 ; Concrete on Metal Decking 19 FLR (Common Zone) | 10d | 2011-09-05 A | 2011-10-01 | T19CO05305C0 | 90% | 1d | 2011-09-01 | 2011-09-12 | 22.9d | 0d |  | CONCRETE [23776 h]; CONCRETE [598 m3]; Cost | T19CO05335C0 | PT | C | 19 | CO | CT | 033 | 99 | BILL 10 | B10 | S2 | 08 | R00 | ACF03 | 033 |  | Z2 | PA | 10TH | E | A12A | MDEC | 11FLR |  |  |  |  | 90 |  |  |  |
| T19CO07807C0 |  | PT-19 ; Cementitious Fire proofing Lvl 19 (Common Zone) | 12d | 2011-10-03 | 2011-10-16 | T20CO03399C0 |  |  |  |  | 25.6d | 0d |  | CEMENTITIOUS FIREPROOFING [3066 h]; CEMENTITIOUS FIREPROOFING [6132 m2]; Cost | T19CO07807C0 | PT | C | 19 | CO | ST | 078 | 07 | BILL 10 | B10 | S2 | 04 | R00 | ACF03 | 078 |  | Z2 | PA | 10TH | E | A12A | FIRE | 11FLR |  | ST |  |  |  |  |  |  |
| T19CO04001C0 |  | PT-P1 ; Blockworks (Common Zone) | 24d | 2011-10-17 | 2011-11-16 | OGNMU00001S0, T19CO07807C0 |  |  |  |  | 77d | 0d |  | BLOCKWORKS [477 h]; Cost | DP1CO04001C0 | PT | C | 19 | CO | BL | 040 | 01 | BILL 5 | B10 | S2 | BL | R00 | ACF06 | 040 |  |  |  |  |  |  |  |  |  |  |  |  |  | 73 | 73 | 04 |
| T19CO04003C0 |  | PT-P1 ; Plaster to Blockwork (Common Zone) | 24d | 2011-10-17 | 2011-11-16 | T19CO04001C0 SS, T19CO04001C0 FF |  |  |  |  | 77d | 51d |  | Labor General [1 h]; Cost | DP1CO04003C0 | PT | C | 19 | CO | BL | 040 | 03 | BILL 5 | B10 | S2 | BL | R00 | ACF06 | 040 |  |  |  |  |  |  |  |  |  |  |  |  |  |  |  |  |
| T19CO04403C0 |  | PT-19 ; C4 Bracket (Common Zone) | 17.88d | 2012-03-01 | 2012-03-21 | T19CO07807C0 |  |  |  |  | 156d | 0d | start on or after 2012-03-01 | FACADE CURTAIN WALL 2 [2809.4 h]; Cost | T19CO04403C0 | PT | C | 19 | CO | FA | 044 | 03 | BILL 10 | B10 | S2 | FC4 | R00 | ACF05 | 044 |  |  |  |  |  |  |  |  |  | FA |  |  |  |  |  |  |
| T19CO04405C0 |  | PT-19 ; C4 Transom & Mullion (Common Zone) | 30d | 2012-03-08 | 2012-04-11 | T19CO04403C0 SS+6d, T19CO04403C0 FF |  |  |  |  | 156d | 0d |  | FACADE CURTAIN WALL 2 [11238.4 h]; Cost | T19CO04405C0 | PT | C | 19 | CO | FA | 044 | 05 | BILL 10 | B10 | S2 | FC4 | R00 | ACF05 | 044 |  |  |  |  |  |  |  |  |  | FA |  |  |  |  |  |  |
| T19CO04425C0 |  | PT-19 ; SG Catwalk Installation (Common Zone) | 52d | 2012-03-20 | 2012-05-20 | TEXCO04407C0 SS+14d, T18CO04415C0 SS |  |  |  |  | 34.02d | 0d |  | Labor General [4687.6 h]; Cost | I05CO04411C0 | PT | C | 19 | CO | FA | 044 | 11 | BILL 10 | B10 | S2 | SG | R00 | ACF05 | 044 |  |  |  |  |  |  |  |  |  | FA |  |  |  |  |  |  |
| T19CO04407C0 |  | PT-19 ; C4 Glazing (Common Zone) | 30d | 2012-03-29 | 2012-05-02 | T19CO04405C0 SS+18d, T19CO04405C0 FF |  |  |  |  | 156d | 0d |  | FACADE CURTAIN WALL 2 [4766.9 h]; FACADE CURTAIN WALL 2 [1742 m2]; FACADE TOTAL QUANTITY m2 [1742 m2]; Cost | T19CO04407C0 | PT | C | 19 | CO | FA | 044 | 07 | BILL 10 | B10 | S2 | FC4 | R00 | ACF05 | 044 |  |  |  |  |  |  |  |  |  | FA |  |  |  |  |  |  |
| T19CO04402C0 |  | PT-19 ; Louvers Bracket (Common Zone) | 18d | 2012-05-28 | 2012-06-19 | T19CO04403C0 SS, BLZHC01581C0, BLZHC01582C0 |  |  |  |  | 127.38d | 0d |  | FACADE LOUVER & GRILL [1057.6 h]; Cost | SR8CO04403C0 | PT | C | 19 | CO | FA | 044 | 03 | BILL 9 | B10 | S2 | FSL | R00 | ACF05 | 044 |  |  |  |  |  |  |  |  |  | FA |  |  |  |  |  |  |
| T19CO04404C0 |  | PT-19 ; Louvers Glass Transom & Mullion (Common Zone) | 24d | 2012-06-19 | 2012-07-17 | T19CO04402C0 |  |  |  |  | 147.38d | 0d |  | FACADE SAND LOUVERS [4229.1 h]; Cost | SR8CO04406C0 | PT | C | 19 | CO | FA | 044 | 06 | BILL 9 | B10 | S2 | FSL | R00 | ACF05 | 044 |  |  |  |  |  |  |  |  |  | FA |  |  |  |  |  |  |
| T19CO04415C0 |  | PT-19 ; PSG Steel grill transom & mullion (Common Zone) | 42d | 2012-06-19 | 2012-08-07 | T19CO04402C0 |  |  |  |  | 127.38d | 0d |  | FACADE STEEL GRILL [3944.1 h]; Cost | I05CO04415C0 | PT | C | 19 | CO | FA | 044 | 15 | BILL 8 | B10 | S2 | PSG | R00 | ACF05 | 044 |  |  |  |  |  |  |  |  |  | FA |  |  |  |  |  |  |
| T19CO04406C0 |  | PT-19 ; Louvers Glass installation (Common Zone) | 18d | 2012-07-17 | 2012-08-07 | T19CO04404C0 |  |  |  |  | 147.38d | 0d |  | FACADE LOUVER & GRILL [1762.2 h]; Cost | SR8CO04405C0 | PT | C | 19 | CO | FA | 044 | 05 | BILL 9 | B10 | S2 | FSL | R00 | ACF05 | 044 |  |  |  |  |  |  |  |  |  | FA |  |  |  |  |  |  |
| T19CO04412C0 |  | PT-19 ; PSG Steel grill (Common Zone) | 30d | 2012-08-07 | 2012-09-13 | T19CO04415C0 |  |  |  |  | 127.38d | 0d |  | FACADE STEEL GRILL [1643.6 h]; Cost | I05CO04411C0 | PT | C | 19 | CO | FA | 044 | 11 | BILL 8 | B10 | S2 | PSG | R00 | ACF05 | 044 |  |  |  |  |  |  |  |  |  | FA |  |  |  |  |  |  |
| T19CO04413C0 |  | PT-19 ; PSG Steel grill Bracket (Common Zone) | 11d | 2012-08-07 | 2012-08-22 | T19CO04412C0 SS |  |  |  |  | 146.38d | 19d |  | FACADE STEEL GRILL [986.1 h]; Cost | I05CO04407C0 | PT | C | 19 | CO | FA | 044 | 07 | BILL 8 | B10 | S2 | PSG | R00 | ACF05 | 044 |  |  |  |  |  |  |  |  |  | FA |  |  |  |  |  |  |

| ID | WBS | Activity | Duration | Start | Finish | Predecessors | Complete | Remaining | Planned start | Planned finish | Total float | Free float | Resources | Cost | Actual cost | change id | U% | CCAD BUILDING(SET) | CCAD PHASE(SET) | CCAD FLOOR(SET) | CCAD ZONE(SET) | CCAD WORK(SET) | CCAD SECTION(SET) | CCAD SERIAL No.(SET) | CCAD SUB ZONE MEP(SET) | CCAD CBS(SET) | CCAD BILL(SET) | CCAD HANDOVER(SET) | CCAD TAG(SET) | CCAD REV(SET) | CCADACF (SET) | CCAD CSA | CCAD SSCF | Act Selector % | Change Order # | NEW ACTIVITY ID | CCAD DIVISION(SET) | CCAD MEQ |
| --- | --- | --- | --- | --- | --- | --- | --- | --- | --- | --- | --- | --- | --- | --- | --- | --- | --- | --- | --- | --- | --- | --- | --- | --- | --- | --- | --- | --- | --- | --- | --- | --- | --- | --- | --- | --- | --- | --- |
|  | 02 | **Mech / HV RM** |  | 2011-09-05 | 2012-12-08 |  |  |  |  |  |  |  |  |  |  |  |  |  |  |  |  |  |  |  |  |  |  |  |  |  |  |  |  |  |  |  |  |  |
| T19M122011C0 |  | PT-19 ; 1st Fix, Inst of Drainage pipe (Mech RM) | 48d | 2011-09-05 A | 2012-01-24 | T19M123001C0, T19M126001C0 SS+14d | 5% | 45.6d | 2011-12-11 | 2012-02-06 | 83.05d | 0d | PLUMBING [1378.8 h]; Cost [74493.8 AED] | 74,493.83 | 3,724.69 | T19ME22011C0 | 0 | PT | C | 19 | M1 | ME | 220 | 11 | 1S | BILL 10 | B10 | S2 | 1F | R00 | ACF04 | MEP | 220 | M1F |  |  |  |  |
| T19M123001C0 |  | PT-19 ; 1st Fix, Inst. of Supports for MEP (Mech RM) | 36d | 2011-09-05 A | 2011-11-30 | T19CO07807C0 | 5% | 34.2d | 2011-10-08 | 2011-11-21 | 65.05d | 0d | MECHANICAL [800.4 h]; Cost [45150.4 AED] | 45,150.38 | 2,257.52 | T19ME23001C0 | 0 | PT | C | 19 | M1 | ME | 230 | 01 | 1S | BILL 10 | B10 | S2 | 1F | R00 | ACF04 | MEP | 230 | M1F |  |  |  |  |
| T19M126001C0 |  | PT-19 ; 1st Fix, Inst of Trunking/Conduiting (Mech RM) | 48d | 2011-09-05 A | 2012-01-24 | T19M123001C0 | 5% | 45.6d | 2011-11-22 | 2012-01-19 | 83.05d | 0d | ELECTRICAL [734.4 h]; Cost [37790.1 AED] | 37,790.1 | 1,889.5 | T19ME26001C0 |  | PT | C | 19 | M1 | ME | 260 | 01 | 1S | BILL 10 | B10 | S2 | 1F | R00 | ACF04 | MEP | 260 | M1F |  |  |  |  |
| T19M109201C0 |  | PT-19 ; Metal Studs (Mech RM) | 20d | 2011-11-02 | 2011-11-30 | T19M123001C0 SS, T19M123001C0 FF |  |  |  |  | 65.05d | 0d | PARTITIONS [1703 h]; PARTITIONS - Metal Studs [236 m]; Cost |  |  | T19ME09201C0 |  | PT | C | 19 | M1 | PT | 092 | 01 |  | BILL 10 | B10 | S2 | 1F | R00 | ACF06 | GP | 092 | PMS |  |  |  |  |
| T19M109203C0 |  | PT-19 ; Partitions 1st face (Mech RM) | 33d | 2011-11-30 | 2012-01-10 | T19M109201C0 |  |  |  |  | 212.18d | 27d | PARTITIONS [236 m]; PARTITIONS [1338 h]; Cost |  |  | T19ME09203C0 |  | PT | C | 19 | M1 | PT | 092 | 03 |  | BILL 10 | B10 | S2 | 2F | R00 | ACF06 | GP | 092 | P1F | 314 | 1463 |  |  |
| T19M122006C0 |  | PT-19 ; 1st Fix, Inst of Water supply pipe (Mech RM) | 60d | 2011-11-30 | 2012-02-12 | T19M122011C0 SS+10d, T19M123001C0 |  |  |  |  | 83.05d | 0d | PLUMBING [4548 h]; Cost |  |  | T19ME22006C0 |  | PT | C | 19 | M1 | ME | 220 | 06 | 1S | BILL 10 | B10 | S2 | 1F | R00 | ACF04 | MEP | 220 | M1F |  |  |  |  |
| T19M121111C0 |  | PT-19 ; 1st Fix, Inst of Sprinkler main pipe (Mech RM) | 48d | 2011-12-18 | 2012-02-14 | T19M122006C0 SS+14d, T19M123001C0 |  |  |  |  | 165.18d | 0d | MECHANICAL [853.2 h]; Cost |  |  | T19ME21111C0 |  | PT | C | 19 | M1 | ME | 211 | 11 | 1S | BILL 10 | B10 | S2 | 1F | R00 | ACF04 | MEP | 211 | M1F |  |  |  |  |
| T19M108101C0 |  | PT-19 ; Metal Door Frames (Mech RM) | 24d | 2011-12-28 | 2012-01-25 | T19M109201C0, GNHE08101C0 FS+126d |  |  |  |  | 234.38d | 49.2d | METAL DOORS [174 h]; Cost |  |  | T19ME08101C0 |  | PT | C | 19 | M1 | DO | 081 | 01 |  | BILL 10 | B10 | S2 | DF | R00 | ACF06 |  | 081 |  | 316 | 1465 | 08 |  |
| T19M123019C0 |  | PT-19 ; 1st Fix, Inst of CHW pipe (Mech RM) | 54d | 2012-01-02 | 2012-03-06 | T19M121111C0 SS+12d, T19M123001C0 |  |  |  |  | 165.18d | 38.3d | MECHANICAL [2467.2 h]; Cost |  |  | T19ME23019C0 |  | PT | C | 19 | M1 | ME | 230 | 19 | 1S | BILL 10 | B10 | S2 | 1F | R00 | ACF04 | MEP | 230 | M1F |  |  |  |  |
| T19M123013C0 |  | PT-19 ; 2nd Fix, Inst of Equipment (AHU) (Mech RM) | 72d | 2012-01-25 | 2012-04-19 | T19CO07807C0, T19M109201C0 FS+6d, T19M122006C0 FF, T19M122011C0 FF, T09M123013C0 |  |  |  |  | 24.75d | 0d | MECHANICAL [32556 h]; Cost |  |  | T19ME23013C0 |  | PT | C | 19 | M1 | ME | 230 | 13 | 2n | BILL 10 | B10 | S2 | 2F | R00 | ACF04 | MEP | 230 |  |  |  |  | H |
| T19M123005C0 |  | PT-19 ; 1st Fix, Inst of Ducting (Mech RM) | 60d | 2012-02-09 | 2012-04-19 | T19M123001C0, T19M123013C0 SS+12d |  |  |  |  | 96.88d | 0d | MECHANICAL [8022 h]; Cost |  |  | T19ME23005C0 |  | PT | C | 19 | M1 | ME | 230 | 05 | 1S | BILL 10 | B10 | S2 | 1F | R00 | ACF04 | MEP | 230 | M1F |  |  |  |  |
| T19M126011C0 |  | PT-19 ; 1st Fix, Inst of Cable Tray (Mech RM) | 48d | 2012-02-09 | 2012-04-05 | T19M123013C0 SS+12d |  |  |  |  | 156.88d | 0d | ELECTRICAL [399.6 h]; Cost |  |  | T19ME26011C0 |  | PT | C | 19 | M1 | ME | 260 | 11 | 1S | BILL 10 | B10 | S2 | 1F | R00 | ACF04 | MEP | 260 | M1F |  |  |  |  |
| T19M109205C0 |  | PT-19 ; Partitions Closing (Mech RM) | 36d | 2012-02-12 | 2012-03-25 | T19M109201C0, T19M109203C0, T19M122006C0, T19M122011C0, TAFOA09214C1 FF, T19M108101C0 FF |  |  |  |  | 185.18d | 0d | PARTITIONS [236 m]; PARTITIONS [1718 h]; Cost |  |  | T19ME09205C0 |  | PT | C | 19 | M1 | PT | 092 | 05 |  | BILL 10 | B10 | S2 | FF | R00 | ACF06 | GP | 092 | P2F | 315 | 1464 |  |  |
| T19M121119C0 |  | PT-19 ; 1st Fix, Inst of Sprinkler branch pipe (Mech RM) | 48d | 2012-02-14 | 2012-04-10 | T19M121111C0 |  |  |  |  | 177.18d | 0d | MECHANICAL [561.6 h]; Cost |  |  | T19ME21119C0 |  | PT | C | 19 | M1 | ME | 211 | 19 | 1S | BILL 10 | B10 | S2 | 1F | R00 | ACF04 | MEP | 211 | M1F |  |  |  |  |
| T19M109603C0 |  | PT-19 ; Steel Platform Access Floor (Mech RM) | 12d | 2012-03-25 | 2012-04-08 | T19M109205C0 |  |  |  |  | 203.18d | 52.3d | ASSORTED FLOOR FINISH [96 h]; Cost |  |  | T19ME09603C0 |  | PT | C | 19 | M1 | FF | 096 | 03 |  | BILL 10 | B10 | S2 | 04 | R00 | ACF06 |  | AF |  | 326 | 1501 |  |  |
| T19M109901C0 |  | PT-19 ; Wall Prime & 1st coat (Mech RM) | 18d | 2012-03-25 | 2012-04-15 | T19CO04003C0, T19M109205C0 |  |  |  |  | 203.18d | 0d | WALL PAINT [446 h]; WALL PAINT [556 m2]; Cost |  |  | T19ME09901C0 |  | PT | C | 19 | M1 | PA | 099 | 01 |  | BILL 10 | B10 | S2 | 01 | R00 | ACF06 |  | 099 |  | 328 | 1469 |  |  |
| T19M121123C0 |  | PT-19 ; Final Fix, Inst of Fire Extinguishers/FHC (Mech RM) | 42d | 2012-03-25 | 2012-05-13 | T19M109205C0 |  |  |  |  | 227.18d | 136.3d | MECHANICAL [3681.6 h]; Cost |  |  | T19ME21123C0 |  | PT | C | 19 | M1 | ME | 211 | 23 | FF | BILL 10 | B10 | S2 | FF | R00 | ACF07 | MEP | 211 |  |  |  |  |  |
| T19M126015C0 |  | PT-19 ; Final Fix, Inst of Ceiling rose (Mech RM) | 36d | 2012-03-25 | 2012-05-06 | T19M109205C0 |  |  |  |  | 185.18d | 0d | ELECTRICAL [61.2 h]; Cost |  |  | T19ME26015C0 |  | PT | C | 19 | M1 | ME | 260 | 15 | FF | BILL 10 | B10 | S2 | FF | R00 | ACF07 | MEP | 260 |  |  |  |  |  |
| T19M126007C0 |  | PT-19 ; 2nd Fix, Cable Pulling (Mech RM) | 48d | 2012-04-05 | 2012-05-31 | T19M126011C0 |  |  |  |  | 168.88d | 60d | ELECTRICAL [2683.2 h]; Cost |  |  | T19ME26007C0 |  | PT | C | 19 | M1 | ME | 260 | 07 | 2n | BILL 10 | B10 | S2 | 2F | R00 | ACF07 | MEP | 260 |  |  |  |  |  |
| T19M121115C0 |  | PT-19 ; 2nd Fix, Inst of Sprinkler droppers (Mech RM) | 42d | 2012-04-10 | 2012-05-29 | T19M109205C0, T19M121119C0 |  |  |  |  | 177.18d | 0d | MECHANICAL [1602 h]; Cost |  |  | T19ME21115C0 |  | PT | C | 19 | M1 | ME | 211 | 15 | 2n | BILL 10 | B10 | S2 | 2F | R00 | ACF07 | MEP | 211 |  |  |  |  |  |
| T19M109903C0 |  | PT-19 ; Wall - Final Paint (Mech RM) | 12d | 2012-04-15 | 2012-04-29 | T19M109901C0 |  |  |  |  | 227.18d | 0d | WALL PAINT [241 h]; WALL PAINT [300 m2]; Cost |  |  | T19ME09903C0 |  | PT | C | 19 | M1 | PA | 099 | 03 |  | BILL 10 | B10 | S2 | 02 | R00 | ACF06 |  | 099 |  | 329 | 1470 |  |  |
| T19M107101C0 |  | PT-19 ; Waterproofing (Mech RM) | 14.88d | 2012-04-19 | 2012-05-07 | T19M123013C0 |  |  |  |  | 153.12d | 0d | THERMAL & MOISTURE [424 h]; THERMAL & MOISTURE [2818 m2]; Cost |  |  | I05ME09901C0 |  | PT | C | 19 | M1 | FF | 071 | 01 |  | BILL 10 | B10 | S2 | 01 | R00 | ACF03 |  | 071 |  | 328 | 1469 |  |  |
| T19M121117C0 |  | PT-19 ; 2nd Fix, Inst of Zone Control Valve (Mech RM) | 42d | 2012-04-19 | 2012-06-07 | T19M109603C0 FF, T19M123013C0, T19M123019C0 |  |  |  |  | 150.88d | 54d | MECHANICAL [832.8 h]; Cost |  |  | T19ME21117C0 |  | PT | C | 19 | M1 | ME | 211 | 17 | 2n | BILL 10 | B10 | S2 | 2F | R00 | ACF07 | MEP | 211 |  |  |  |  |  |
| T19M123011C0 |  | PT-19 ; 2nd Fix, Inst of Equipment (FCU,FAN,PUMP) (Mech RM) | 72d | 2012-04-19 | 2012-07-14 | T19M123013C0 |  |  |  |  | 24.75d | 0d | MECHANICAL [5396.4 h]; Cost |  |  | T19ME23011C0 |  | PT | C | 19 | M1 | ME | 230 | 11 | 2n | BILL 10 | B10 | S2 | 2F | R00 | ACF04 | MEP | 230 |  |  |  |  | H |
| T19M123015C0 |  | PT-19 ; 2nd Fix, Inst of VCD's/FD's (Mech RM) | 42d | 2012-04-19 | 2012-06-07 | T19M123005C0 |  |  |  |  | 132.88d | 6d | MECHANICAL [1753.2 h]; Cost |  |  | T19ME23015C0 |  | PT | C | 19 | M1 | ME | 230 | 15 | 2n | BILL 10 | B10 | S2 | 2F | R00 | ACF07 | MEP | 230 |  |  |  |  |  |
| T19M123017C0 |  | PT-19 ; 2nd Fix, Insulation of CHW pipe & Duct (Mech RM) | 48d | 2012-04-19 | 2012-06-14 | T19M123005C0, T19M123019C0 |  |  |  |  | 126.88d | 0d | MECHANICAL [3064.8 h]; Cost |  |  | T19ME23017C0 |  | PT | C | 19 | M1 | ME | 230 | 17 | 2n | BILL 10 | B10 | S2 | 2F | R00 | ACF07 | MEP | 230 |  |  |  |  |  |
| T19M126009C0 |  | PT-19 ; 2nd Fix, Inst of Equipment (DB, TR, SG) (Mech RM) | 90d | 2012-04-19 | 2012-08-04 | T19M123013C0 |  |  |  |  | 102.88d | 6d | ELECTRICAL [2133.6 h]; Cost |  |  | T19ME26009C0 |  | PT | C | 19 | M1 | ME | 260 | 09 | 2n | BILL 10 | B10 | S2 | 2F | R00 | ACF04 | MEP | 260 |  |  |  |  | E |
| T19M127010C0 |  | PT-19 ; 1st Fix, Inst of Trunking for ELV system (Mech RM) | 48d | 2012-04-19 | 2012-06-14 | T19M123005C0 |  |  |  |  | 96.88d | 0d | ELECTRICAL [1512 h]; Cost |  |  | T19ME27010C0 |  | PT | C | 19 | M1 | ME | 270 | 10 | 1S | BILL 10 | B10 | S2 | 1F | R00 | ACF04 | MEP | 270 | M1F |  |  |  |  |
| T19M127020C0 |  | PT-19 ; 2nd Fix, Inst of ELV Equipment (Panels) (Mech RM) | 66d | 2012-04-19 | 2012-07-07 | T19M123013C0 |  |  |  |  | 126.88d | 30d | ELECTRICAL [1819.2 h]; Cost |  |  | T19ME27020C0 |  | PT | C | 19 | M1 | ME | 270 | 20 | 2n | BILL 10 | B10 | S2 | 2F | R00 | ACF04 | MEP | 270 |  |  |  |  | E |
| T19M126017C0 |  | PT-19 ; Final Fix, Inst of Switch/Sockets (Mech RM) | 12d | 2012-04-29 | 2012-05-13 | T19M109901C0, T19M109903C0 |  |  |  |  | 227.18d | 136.3d | ELECTRICAL [362.4 h]; Cost |  |  | T19ME26017C0 |  | PT | C | 19 | M1 | ME | 260 | 17 | FF | BILL 10 | B10 | S2 | FF | R00 | ACF07 | MEP | 260 |  |  |  |  |  |
| T19M126019C0 |  | PT-19 ; Final Fix, Inst of Light fittings (Mech RM) | 48d | 2012-05-06 | 2012-07-02 | T19M109901C0, T19M126015C0 |  |  |  |  | 185.18d | 94.3d | ELECTRICAL [7815.6 h]; Cost |  |  | T19ME26019C0 |  | PT | C | 19 | M1 | ME | 260 | 19 | FF | BILL 10 | B10 | S2 | FF | R00 | ACF07 | MEP | 260 |  |  |  |  |  |
| T19M109601C0 |  | PT-19 ; Floor Finishes (Mech RM) | 35.88d | 2012-05-07 | 2012-06-19 | T19M107101C0, T19M109205C0 |  |  |  |  | 153.12d | 0d | ASSORTED FLOOR FINISH [17008 h]; ASSORTED FLOOR FINISH [9446 m2]; Cost |  |  | T19ME09601C0 |  | PT | C | 19 | M1 | FF | 096 | 01 |  | BILL 10 | B10 | S2 | 01 | R00 | ACF06 |  | FF |  | 326 | 1501 |  |  |
| T19M121121C0 |  | PT-19 ; Final Fix, Inst of Sprinklers head (Mech RM) | 36d | 2012-05-29 | 2012-07-11 | T19M121115C0 |  |  |  |  | 177.18d | 86.3d | MECHANICAL [234 h]; Cost |  |  | T19ME21121C0 |  | PT | C | 19 | M1 | ME | 211 | 21 | FF | BILL 10 | B10 | S2 | FF | R00 | ACF07 | MEP | 211 |  |  |  |  |  |
| T19M123023C0 |  | PT-19 ; Final Fix, Inst of Flexible Duct & Plenum boxes (Mech RM) | 36d | 2012-06-14 | 2012-07-28 | T19M123015C0, T19M123017C0 |  |  |  |  | 126.88d | 30d | MECHANICAL [30 h]; Cost |  |  | T19ME23023C0 |  | PT | C | 19 | M1 | ME | 230 | 23 | FF | BILL 10 | B10 | S2 | FF | R00 | ACF07 | MEP | 230 |  |  |  |  |  |
| T19M127001C0 |  | PT-19 ; 1st Fix, Wiring/ Cabling work (Mech RM) | 48d | 2012-06-14 | 2012-08-11 | T19M126001C0, T19M126011C0, T19M127010C0 |  |  |  |  | 96.88d | 0d | ELECTRICAL [392.4 h]; Cost |  |  | T19ME27001C0 |  | PT | C | 19 | M1 | ME | 270 | 01 | 1S | BILL 10 | B10 | S2 | 1F | R00 | ACF04 | MEP | 270 | M1F |  |  |  |  |
| T19M108105C0 |  | PT-19 ; Metal Doors (Mech RM) | 22d | 2012-06-19 | 2012-07-15 | T19M108101C0, T19M109601C0, T19M109901C0 |  |  |  |  | 153.12d | 0d | METAL DOORS [720 h]; METAL DOORS [72 no]; Cost |  |  | T19ME08105C0 |  | PT | C | 19 | M1 | DO | 081 | 05 |  | BILL 10 | B10 | S2 | DR | R00 | ACF06 |  | 081 |  | 317 | 1466 | 08 |  |
| T19M122003C0 |  | PT-19 ; Final Fix, Inst of All drain (Mech RM) | 18d | 2012-06-19 | 2012-07-10 | T19M109601C0 |  |  |  |  | 178.12d | 87.25d | PLUMBING [1378.8 h]; Cost |  |  | T19ME22003C0 | 0 | PT | C | 19 | M1 | ME | 220 | 03 | FF | BILL 10 | B10 | S2 | FF | R00 | ACF07 | MEP | 220 |  |  |  |  |  |
| T19M123009C0 |  | PT-19 ; 2nd Fix, Inst of VAV'S CHW connection (Mech RM) | 42d | 2012-07-14 | 2012-09-03 | T19M123011C0 |  |  |  |  | 90.88d | 0d | MECHANICAL [1450.8 h]; Cost |  |  | T19ME23009C0 |  | PT | C | 19 | M1 | ME | 230 | 09 | 2n | BILL 10 | B10 | S2 | 2F | R00 | ACF07 | MEP | 230 |  |  |  |  |  |
| T19M108709C0 |  | PT-19 ; Ironmongery (Mech RM) | 31.75d | 2012-07-15 | 2012-08-22 | T19M108105C0 |  |  |  |  | 153.12d | 62.25d | IRONMONGERY [660 h]; IRONMONGERY [66 no]; Cost |  |  | T19ME08709C0 |  | PT | C | 19 | M1 | DO | 087 | 09 |  | BILL 10 | B10 | S2 | IM | R00 | ACF06 |  | 087 |  | 322 | 1467 | 08 |  |
| T19M126005C0 |  | PT-19 ; 2nd Fix, Wiring for Power/Lighting/Emergency (Mech RM) | 42d | 2012-08-11 | 2012-10-01 | T19M126001C0, T19M126007C0, T19M126011C0, T19M127001C0, T19M127010C0 |  |  |  |  | 108.88d | 0d | ELECTRICAL [392.4 h]; Cost |  |  | T19ME26005C0 |  | PT | C | 19 | M1 | ME | 260 | 05 | 2n | BILL 10 | B10 | S2 | 2F | R00 | ACF07 | MEP | 260 |  |  |  |  |  |
| T19M127003C0 |  | PT-19 ; Final Fix, BMS connection work to Equipment (Mech RM) | 54d | 2012-08-11 | 2012-10-15 | T19M121117C0, T19M123011C0, T19M123013C0, T19M123015C0, T19M126009C0, T19M127001C0, T19M127020C0 |  |  |  |  | 96.88d | 6d | ELECTRICAL [29564.4 h]; Cost |  |  | T19ME27003C0 |  | PT | C | 19 | M1 | ME | 270 | 03 | FF | BILL 10 | B10 | S2 | FF | R00 | ACF07 | MEP | 270 |  |  |  |  |  |
| T19M126013C0 |  | PT-19 ; Final Fix, Termination & Gladding of Cables (Mech RM) | 36d | 2012-08-18 | 2012-10-01 | T19M109205C0, T19M126005C0 SS+6d |  |  |  |  | 108.88d | 18d | ELECTRICAL [148.8 h]; Cost |  |  | T19ME26013C0 |  | PT | C | 19 | M1 | ME | 260 | 13 | FF | BILL 10 | B10 | S2 | FF | R00 | ACF07 | MEP | 260 |  |  |  |  |  |
| T19M123021C0 |  | PT-19 ; Final Fix, Inst of Grilles & Diffusers (Mech RM) | 36d | 2012-09-03 | 2012-10-15 | T19M123023C0, T19M123009C0 |  |  |  |  | 96.88d | 6d | MECHANICAL [1498.8 h]; Cost |  |  | T19ME23021C0 |  | PT | C | 19 | M1 | ME | 230 | 21 | FF | BILL 10 | B10 | S2 | FF | R00 | ACF07 | MEP | 230 |  |  |  |  |  |
| T19M127030C0 |  | PT-19 ; Final Fix, Inst of ELV device (Detector/Speaker) (Mech RM) | 42d | 2012-09-03 | 2012-10-22 | T19M109901C0, T19M123009C0, T19M127020C0, T19ER27020C0 |  |  |  |  | 90.88d | 0d | ELECTRICAL [3571.2 h]; Cost |  |  | T19ME27030C0 |  | PT | C | 19 | M1 | ME | 270 | 30 | FF | BILL 10 | B10 | S2 | FF | R00 | ACF07 | MEP | 270 |  |  |  |  |  |

| ID | WBS | Activity | Duration | Start | Finish | Predecessors | Complete | Remaining | Planned start | Planned finish | Total float | Free float | Resources | Cost | Actual cost | change id | CCAD BUILDING(SET) | CCAD PHASE(SET) | CCAD FLOOR(SET) | CCAD ZONE(SET) | CCAD WORK(SET) | CCAD SECTION(SET) | CCAD SERIAL No.(SET) | CCAD CBS(SET) | CCAD BILL(SET) | CCAD HANDOVER(SET) | CCAD TAG(SET) | CCAD REV(SET) | CCADACF (SET) | CCAD SSCF | U% | CCAD SUB ZONE MEP(SET) | CCAD CSA | Act Selector % | Change Order # | NEW ACTIVITY ID | CCAD DIVISION(SET) | TO BE DELETED | CCAD MEQ |
| --- | --- | --- | --- | --- | --- | --- | --- | --- | --- | --- | --- | --- | --- | --- | --- | --- | --- | --- | --- | --- | --- | --- | --- | --- | --- | --- | --- | --- | --- | --- | --- | --- | --- | --- | --- | --- | --- | --- | --- |
|  | 10 | **Precommissioning Tesing & snagging (Mech / HV RM)** |  | 2012-10-22 | 2012-12-08 |  |  |  |  |  |  |  |  |  |  |  |  |  |  |  |  |  |  |  |  |  |  |  |  |  |  |  |  |  |  |  |  |  |  |
| T19TS01801C0 |  | PT-19 ; MEP de-snag, FIREM sign-off | 10.75d | 2012-10-22 | 2012-11-06 | T19M121123C0, T19M126017C0, T19M122003C0, T19CO04406C0, T19M121121C0, T19M123021C0, T19M123023C0, T19M126013C0, T19M126015C0, T19M126019C0, T19M127003C0, T19M127030C0 |  |  |  |  | 90.88d | 0d | TESTING & COMMISSIONING [2040 h]; Cost |  |  | T19TS01801C0 | PT | C | 19 | TS | SC | 018 | 01 | BILL 10 | B10 | S2 | 01 | R00 | ACF07 | 018 |  |  |  |  |  |  |  |  |  |
| T19TS01808C0 |  | PT-19 ; Touch-up & Clean / JV inspection /CIR /De-snag | 18d | 2012-11-06 | 2012-11-28 | T19M108709C0, T19M109601C0, T19M109603C0, T19M109903C0, T19TS01801C0, T19CO04412C0, T19CO04413C0 |  |  |  |  | 90.88d | 0d | TESTING & COMMISSIONING [128 h]; Cost |  |  | T19TS01802C0 | PT | C | 19 | TS | SC | 018 | 02 | BILL 10 | B10 | S2 | 02 | R00 | ACF07 | 018 |  |  |  |  |  |  |  |  |  |
| T19TS01813C0 |  | PT-19 ; Consultant's final de-snag inspection | 7d | 2012-11-28 | 2012-12-08 | T19TS01808C0, T19TS01816C0 |  |  |  |  | 90.88d | 28.25d | Labor General [1 h]; Cost |  |  | T19TS01803C0 | PT | C | 19 | TS | SC | 018 | 03 | BILL 10 | B10 | S2 | 03 | R00 | ACF07 | 018 |  |  |  |  |  |  |  |  |  |
|  | 03 | **Royal Kitchen** |  | 2011-09-05 | 2013-02-24 |  |  |  |  |  |  |  |  |  |  |  |  |  |  |  |  |  |  |  |  |  |  |  |  |  |  |  |  |  |  |  |  |  |  |
| T19RK22011C0 |  | PT-19 ; 2nd Fix, Drainage/Water pipe (wall) (Royal Kitchen) | 42d | 2011-09-05 A | 2012-03-13 | T19RK09201C0 | 5% | 39.9d | 2012-01-25 | 2012-03-15 | 67.95d | 0d | PLUMBING [1378.8 h]; Cost [74493.8 AED] | 74,493.83 | 3,724.69 | T19RK22011C0 | PT | C | 19 | RK | ME | 220 | 11 | BILL 10 | B10 | S2 | 2F | R00 | ACF07 | 220 | 0 | 2n | MEP |  |  |  |  |  |  |
| T19RK22019C0 |  | PT-19 ; 1st Fix, Inst of Drainage pipe (ceiling) (Royal Kitchen) | 54d | 2011-09-05 A | 2012-02-27 | T19RK23001C0, T19RK26013C0 SS+14d | 5% | 51.3d | 2012-01-09 | 2012-03-12 | 39.6d | 0d | PLUMBING [2326.8 h]; Cost [74493.8 AED] | 74,493.83 | 3,724.69 | T19RK22019C0 | PT | C | 19 | RK | ME | 220 | 19 | BILL 10 | B10 | S2 | 1F | R00 | ACF04 | 220 | 0 | 1S | MEP | M1F |  |  |  |  |  |
| T19RK23001C0 |  | PT-19 ; 1st Fix, Inst. of Supports for MEP (Royal Kitchen) | 36d | 2011-09-05 A | 2011-11-28 | T19CO07807C0 | 10% | 32.4d | 2011-10-08 | 2011-11-21 | 39.6d | 0d | MECHANICAL [800.4 h]; Cost [45150.4 AED] | 45,150.38 | 4,515.04 | T19RK23001C0 | PT | C | 19 | RK | ME | 230 | 01 | BILL 10 | B10 | S2 | 1F | R00 | ACF04 | 230 |  | 1S | MEP | M1F |  |  |  |  |  |
| T19RK26001C0 |  | PT-19 ; 1st Fix, Inst of Trunking/Conduiting (Royal Kitchen) | 48d | 2011-09-05 A | 2012-01-22 | T19CO07807C0, T19RK23001C0 | 5% | 45.6d | 2011-11-22 | 2012-01-19 | 39.6d | 0d | ELECTRICAL [734.4 h]; Cost [37790.1 AED] | 37,790.1 | 1,889.5 | T19RK26001C0 | PT | C | 19 | RK | ME | 260 | 01 | BILL 10 | B10 | S2 | 1F | R00 | ACF04 | 260 |  | 1S | MEP | M1F |  |  |  |  |  |
| T19RK26009C0 |  | PT-19 ; 2nd Fix, Inst of Wall conduites (Royal Kitchen) | 42d | 2011-09-05 A | 2012-03-13 | T19RK09201C0 | 5% | 39.9d | 2012-01-25 | 2012-03-15 | 67.95d | 0d | ELECTRICAL [734.4 h]; Cost [37790.1 AED] | 37,790.1 | 1,889.5 | T19RK26009C0 | PT | C | 19 | RK | ME | 260 | 09 | BILL 10 | B10 | S2 | 2F | R00 | ACF07 | 260 |  | 2n | MEP |  |  |  |  |  |  |
| T19RK27010C0 |  | PT-19 ; 1st Fix, Inst of Trunking for ELV system (Royal Kitchen) | 48d | 2011-11-28 | 2012-01-25 | T19CO07807C0, T19RK23001C0, T19RK26001C0 SS+14d |  |  |  |  | 39.6d | 0d | ELECTRICAL [1512 h]; Cost |  |  | T19RK27010C0 | PT | C | 19 | RK | ME | 270 | 10 | BILL 10 | B10 | S2 | 1F | R00 | ACF04 | 270 |  | 1S | MEP | M1F |  |  |  |  |  |
| T19RK09201C0 |  | PT-19 ; Metal Studs (Royal Kitchen) | 42d | 2011-12-06 | 2012-01-25 | T19RK23001C0 FF, T19RK23001C0 SS |  |  |  |  | 26.6d | 0d | PARTITIONS [1848 h]; PARTITIONS - Metal Studs [256 m]; Cost |  |  | T19RK09201C0 | PT | C | 19 | RK | PT | 092 | 01 | BILL 10 | B10 | S2 | 1F | R00 | ACF06 | 092 |  |  | GP |  | 313 | 944 |  |  |  |
| T19RK26013C0 |  | PT-19 ; 1st Fix, Inst of Cable Tray (Royal Kitchen) | 48d | 2011-12-11 | 2012-02-07 | T19CO07807C0, T19RK23001C0, T19RK27010C0 SS+10d |  |  |  |  | 39.6d | 0d | ELECTRICAL [399.6 h]; Cost |  |  | T19RK26013C0 | PT | C | 19 | RK | ME | 260 | 13 | BILL 10 | B10 | S2 | 1F | R00 | ACF04 | 260 |  | 1S | MEP | M1F |  |  |  |  |  |
| T19RK22005C0 |  | PT-19 ; 1st Fix, Inst of Water supply pipe (ceiling) (Royal Kitchen) | 60d | 2011-12-27 | 2012-03-08 | T19RK22019C0 SS+10d, T19RK23001C0 |  |  |  |  | 39.6d | 0d | PLUMBING [4548 h]; Cost |  |  | T19RK22005C0 | PT | C | 19 | RK | ME | 220 | 05 | BILL 10 | B10 | S2 | 1F | R00 | ACF04 | 220 |  | 1S | MEP | M1F |  |  |  |  |  |
| T19RK21111C0 |  | PT-19 ; 1st Fix, Inst of Sprinkler main pipe (Royal Kitchen) | 48d | 2012-01-11 | 2012-03-08 | T19RK22005C0 SS+12d, T19RK23001C0 |  |  |  |  | 39.6d | 0d | MECHANICAL [853.2 h]; Cost |  |  | T19RK21111C0 | PT | C | 19 | RK | ME | 211 | 11 | BILL 10 | B10 | S2 | 1F | R00 | ACF04 | 211 |  | 1S | MEP | M1F |  |  |  |  |  |
| T19RK09203C0 |  | PT-19 ; Partitions 1st face (Royal Kitchen) | 45d | 2012-01-25 | 2012-03-19 | T19RK09201C0 |  |  |  |  | 68.72d | 0.78d | PARTITIONS [256 m]; PARTITIONS [1434 h]; Cost |  |  | T19RK09203C0 | PT | C | 19 | RK | PT | 092 | 03 | BILL 10 | B10 | S2 | 2F | R00 | ACF06 | 092 |  |  | GP | P1F | 314 | 945 |  |  |  |
| T19RK23017C0 |  | PT-19 ; 1st Fix, Inst of CHW pipe (Royal Kitchen) | 54d | 2012-01-28 | 2012-04-01 | T19RK21111C0 SS+14d, T19RK23001C0 |  |  |  |  | 39.6d | 0d | MECHANICAL [2467.2 h]; Cost |  |  | T19RK23017C0 | PT | C | 19 | RK | ME | 230 | 17 | BILL 10 | B10 | S2 | 1F | R00 | ACF04 | 230 |  | 1S | MEP | M1F |  |  |  |  |  |
| T19RK27001C0 |  | PT-19 ; 1st Fix, Wiring/ Cabling work (Royal Kitchen) | 48d | 2012-02-07 | 2012-04-03 | T19RK26001C0, T19RK26013C0, T19RK27010C0 |  |  |  |  | 127.6d | 88d | ELECTRICAL [392.4 h]; Cost |  |  | T19RK27001C0 | PT | C | 19 | RK | ME | 270 | 01 | BILL 10 | B10 | S2 | 1F | R00 | ACF04 | 270 |  | 1S | MEP | M1F |  |  |  |  |  |
| T19RK23023C0 |  | PT-19 ; 1st Fix, Inst of Main Ducting (Royal Kitchen) | 60d | 2012-02-09 | 2012-04-19 | T19RK23001C0, T19RK23017C0 SS+10d |  |  |  |  | 65.6d | 0d | MECHANICAL [8022 h]; Cost |  |  | T19RK23023C0 | PT | C | 19 | RK | ME | 230 | 23 | BILL 10 | B10 | S2 | 1F | R00 | ACF04 | 230 |  | 1S | MEP | M1F |  |  |  |  |  |
| T19RK08103C0 |  | PT-19 ; Door Frames (Royal Kitchen) | 18d | 2012-02-23 | 2012-03-15 | T19RK09201C0 SS+14d, GNHE08101C0 FS+126d, T19PA08103C0 SS+3d |  |  |  |  | 45.4d | 0d | ASSORTED DOORS [148 h]; Cost |  |  | T19RK08103C0 | PT | C | 19 | RK | DO | 081 | 03 | BILL 10 | B10 | S2 | DF | R00 | ACF06 | 081 |  |  |  |  | 316 | 947 | 08 |  |  |
| T19RK21117C0 |  | PT-19 ; 1st Fix, Inst of Sprinkler branch pipe (Royal Kitchen) | 48d | 2012-03-08 | 2012-05-03 | T19RK21111C0 |  |  |  |  | 101.6d | 62d | MECHANICAL [561.6 h]; Cost |  |  | T19RK21117C0 | PT | C | 19 | RK | ME | 211 | 17 | BILL 10 | B10 | S2 | 1F | R00 | ACF04 | 211 |  | 1S | MEP | M1F |  |  |  |  |  |
| T19RK01005C0 |  | PT-19 ; 2nd, Wall Inspection by Consultant (Royal Kitchen) | 5.88d | 2012-03-13 | 2012-03-20 | T19RK22011C0, T19RK26009C0 |  |  |  |  | 67.95d | 0d | Labor General [1.2 h]; Cost |  |  | T19RK01005C0 | PT | C | 19 | RK | ME | 010 | 05 | BILL 10 | B10 | S2 | WI | R00 | ACF07 | 010 |  | 2n | MEP |  |  |  |  |  |  |
| T19RK09205C0 |  | PT-19 ; Partitions Closing (Royal Kitchen) | 47.88d | 2012-03-20 | 2012-05-15 | T19RK01005C0, T19RK09203C0, T19RK22005C0, T19RK22019C0, TAFOA09214C1 FF, T19RK08103C0 FF |  |  |  |  | 67.95d | 0d | PARTITIONS [255.88 m]; PARTITIONS [1845 h]; Cost |  |  | T19RK09205C0 | PT | C | 19 | RK | PT | 092 | 05 | BILL 10 | B10 | S2 | FF | R00 | ACF06 | 092 |  |  | GP | P2F | 315 | 946 |  |  |  |
| T19RK23009C0 |  | PT-19 ; 2nd Fix, Inst of VAV'S CHW connection (Royal Kitchen) | 42d | 2012-04-01 | 2012-05-20 | T19RK23017C0 |  |  |  |  | 39.6d | 0d | MECHANICAL [1450.8 h]; Cost |  |  | T19RK23009C0 | PT | C | 19 | RK | ME | 230 | 09 | BILL 10 | B10 | S2 | 2F | R00 | ACF07 | 230 |  | 2n | MEP |  |  |  |  |  |  |
| T19RK23008C0 |  | PT-19 ; 1st Fix, Inst of VCD's/FD's (Royal Kitchen) | 48d | 2012-04-19 | 2012-06-14 | T19RK23023C0 |  |  |  |  | 65.6d | 26d | MECHANICAL [1753.2 h]; Cost |  |  | T19RK23008C0 | PT | C | 19 | RK | ME | 230 | 08 | BILL 10 | B10 | S2 | 1F | R00 | ACF04 | 230 |  | 1S | MEP | M1F |  |  |  |  |  |
| T19RK07103C0 |  | PT-19 ; Waterproofing (Royal Kitchen) | 12d | 2012-05-15 | 2012-05-29 | T19RK08103C0, T19RK09205C0 |  |  |  |  | 118.95d | 0d | THERMAL & MOISTURE [232 h]; THERMAL & MOISTURE [1529 m2]; Cost |  |  | T19RK07103C0 | PT | C | 19 | RK | FF | 071 | 03 | BILL 10 | B10 | S2 | 01 | R00 | ACF03 | 071 |  |  |  |  | 105 | 999 |  |  |  |
| T19RK09601C0 |  | PT-19 ; Floor Finishes (Royal Kitchen) | 0d | 2012-05-15 | 2012-05-15 | T19RK09205C0 |  |  |  |  | 201.95d | 19d | Cost |  |  | T19RK09601C0 | PT | C | 19 | RK | FF | 096 | 01 | BILL 10 | B10 | S2 | 01 | R00 | ACF06 | FF |  |  |  |  | 326 | 955 |  | RENAME |  |
| T19RK09901C0 |  | PT-19 ; Wall Prime & 1st coat (Royal Kitchen) | 12d | 2012-05-15 | 2012-05-29 | T19CO04003C0, T19RK09205C0 |  |  |  |  | 79.95d | 0d | WALL PAINT [284 h]; WALL PAINT [353 m2]; Cost |  |  | T19RK09901C0 | PT | C | 19 | RK | PA | 099 | 01 | BILL 10 | B10 | S2 | 01 | R00 | ACF06 | 099 |  |  |  |  | 328 | 956 |  |  |  |
| T19RK23011C0 |  | PT-19 ; 2nd Fix, Inst of Equipment (FCU,FAN) (Royal Kitchen) | 90d | 2012-05-15 | 2012-09-01 | T19RK09205C0 |  |  |  |  | 103.95d | 64.35d | MECHANICAL [2634 h]; Cost |  |  | T19RK23011C0 | PT | C | 19 | RK | ME | 230 | 11 | BILL 10 | B10 | S2 | 2F | R00 | ACF04 | 230 |  | 2n | MEP |  |  |  |  |  | H |
| T19RK26005C0 |  | PT-19 ; 2nd Fix, Wiring for Power/Lighting/Emergency (Royal Kitchen) | 42d | 2012-05-15 | 2012-07-04 | T19RK09205C0 |  |  |  |  | 115.95d | 0d | ELECTRICAL [392.4 h]; Cost |  |  | T19RK26005C0 | PT | C | 19 | RK | ME | 260 | 05 | BILL 10 | B10 | S2 | 2F | R00 | ACF07 | 260 |  | 2n | MEP |  |  |  |  |  |  |
| T19RK26007C0 |  | PT-19 ; 2nd Fix, Cable Pulling (Royal Kitchen) | 48d | 2012-05-15 | 2012-07-11 | T19RK09201C0, T19RK09205C0 |  |  |  |  | 150.45d | 110.85d | ELECTRICAL [2683.2 h]; Cost |  |  | T19RK26007C0 | PT | C | 19 | RK | ME | 260 | 07 | BILL 10 | B10 | S2 | 2F | R00 | ACF07 | 260 |  | 2n | MEP |  |  |  |  |  |  |
| T19RK26011C0 |  | PT-19 ; 2nd Fix, Inst of Equipment (DB) (Royal Kitchen) | 54d | 2012-05-15 | 2012-07-18 | T19RK09205C0 |  |  |  |  | 147.95d | 82.35d | ELECTRICAL [878.4 h]; Cost |  |  | T19RK26011C0 | PT | C | 19 | RK | ME | 260 | 11 | BILL 10 | B10 | S2 | 2F | R00 | ACF04 | 260 |  | 2n | MEP |  |  |  |  |  | E |
| T19RK26053C0 |  | PT-19 ; 2nd Fix, Wiring / Cabling (Royal Kitchen) | 42d | 2012-05-15 | 2012-07-04 | T19RK09203C0, T19RK09205C0 |  |  |  |  | 67.95d | 28.35d | ELECTRICAL [392.4 h]; Cost |  |  | T19RK26053C0 | PT | C | 19 | RK | ME | 260 | 53 | BILL 10 | B10 | S2 | 2F | R00 | ACF07 | 260 |  | 2n | MEP |  | 389 | 977 |  |  |  |
| T19RK23015C0 |  | PT-19 ; 2nd Fix, Insulation of CHW pipe & Duct (Royal Kitchen) | 48d | 2012-05-20 | 2012-07-16 | T19RK23009C0, T19RK23017C0, T19RK23023C0 |  |  |  |  | 39.6d | 0d | MECHANICAL [3064.8 h]; Cost |  |  | T19RK23015C0 | PT | C | 19 | RK | ME | 230 | 15 | BILL 10 | B10 | S2 | 2F | R00 | ACF07 | 230 |  | 2n | MEP |  |  |  |  |  |  |
| T19RK05501C0 |  | PT-19 ; Handrails & balustrade (Royal Kitchen) | 32d | 2012-05-29 | 2012-07-07 | T19RK09901C0 |  |  |  |  | 205.95d | 166.35d | SECONDARY STEEL [104 h]; Cost |  |  | T19RK05501C0 | PT | C | 19 | RK | SW | 055 | 01 | BILL 10 | B10 | S2 | 01 | R00 | ACF03 | a |  |  |  |  |  |  |  |  |  |
| T19RK09305C0 |  | PT-19 ; Ceramic floor tile (Royal Kitchen) | 23d | 2012-05-29 | 2012-06-26 | T19RK07103C0 |  |  |  |  | 118.95d | 0d | CERAMIC FLOOR TILES [112 h]; CERAMIC FLOOR TILES [59 m2]; Cost |  |  | T19RK09305C0 | PT | C | 19 | RK | FF | 093 | 05 | BILL 10 | B10 | S2 | 02 | R00 | ACF06 | CT |  |  |  |  | 106 | 1000 |  |  |  |
| T19RK11004C0 |  | PT-19 ; Cold room / Kitchen Hood (Royal Kitchen) | 7d | 2012-05-29 | 2012-06-06 | T19RK07103C0 |  |  |  |  | 205.2d | 0d | Labor General [1 h]; Cost |  |  | DP2KS07103C0 | PT | C | 19 | RK | EQ | 110 | 04 | BILL 10 | B10 | S2 | 06 | R00 | ACF08 | KE |  |  |  |  | 105 | 999 |  |  |  |
| T19RK11071C0 |  | PT-19 ; Food Service Equipment (Royal Kitchen) | 25.75d | 2012-06-06 | 2012-07-07 | T19RK09601C0, T19RK11004C0 |  |  |  |  | 205.2d | 165.6d | FF&E [1673 h]; Cost |  |  | T19RK11071C0 | PT | C | 19 | RK | EQ | 110 | 71 | BILL 10 | B10 | S2 | 06 | R00 | ACF08 | KE |  |  | FK |  | 313 | 944 |  |  |  |
| T19RK22025C0 |  | PT-19 ; Final Fix, Inst of Sanitary Ware (Royal Kitchen) | 42d | 2012-06-26 | 2012-08-14 | T19RK09205C0, T19RK09305C0 |  |  |  |  | 118.95d | 0d | PLUMBING [3690 h]; Cost |  |  | T19RK22025C0 | PT | C | 19 | RK | ME | 220 | 25 | BILL 10 | B10 | S2 | FF | R00 | ACF07 | 220 |  | FF | MEP |  |  |  |  |  |  |
| T19RK26015C0 |  | PT-19 ; Final Fix, Termination & Gladding of Cables (Royal Kitchen) | 36d | 2012-07-04 | 2012-08-15 | T19RK26005C0 |  |  |  |  | 115.95d | 76.35d | ELECTRICAL [148.8 h]; Cost |  |  | T19RK26015C0 | PT | C | 19 | RK | ME | 260 | 15 | BILL 10 | B10 | S2 | FF | R00 | ACF07 | 260 |  | FF | MEP |  |  |  |  |  |  |
| T19RK09501C0 |  | PT-19 ; Ceiling Grid and Service Tile (Royal Kitchen) | 18d | 2012-07-16 | 2012-08-06 | T19RK09205C0 SS+15d, T19RK21117C0, T19RK23008C0, T19RK23009C0, T19RK23015C0, T19RK27001C0, T19RK26053C0 FF, T19RK09901C0 |  |  |  |  | 39.6d | 0d | CEILING GRID FOR GYPSUM [2225.59 h]; CEILING GRID FOR GYPSUM [190.49 m2]; Cost |  |  | T19RK09501C0 | PT | C | 19 | RK | CE | 095 | 01 | BILL 10 | B10 | S2 | 01 | R00 | ACF06 | 095 |  |  |  |  | 323 | 952 |  |  |  |
| T19RK08107C0 |  | PT-19 ; Doors (Royal Kitchen) | 19d | 2012-08-06 | 2012-08-30 | T19RK08103C0, T19RK09501C0, T19RK09601C0, T19RK09901C0 |  |  |  |  | 137.1d | 0d | ASSORTED DOORS [300 h]; ASSORTED DOORS [30 no]; Cost |  |  | T19RK08107C0 | PT | C | 19 | RK | DO | 081 | 07 | BILL 10 | B10 | S2 | DR | R00 | ACF06 | 081 |  |  |  |  | 317 | 948 | 08 |  |  |
| T19RK09905C0 |  | PT-19 ; Ceiling Prime & 1st coat (Royal Kitchen) | 12d | 2012-08-06 | 2012-08-22 | T19RK09501C0 |  |  |  |  | 143.6d | 0d | CEILING PAINT [17 h]; CEILING PAINT [20 m2]; Cost |  |  | T19RK09905C0 | PT | C | 19 | RK | PA | 099 | 05 | BILL 10 | B10 | S2 | 01 | R00 | ACF06 | 099 |  |  |  |  | 330 | 958 |  |  |  |
| T19RK21115C0 |  | PT-19 ; 2nd Fix, Inst of Sprinkler droppers (Royal Kitchen) | 42d | 2012-08-06 | 2012-09-26 | T19RK09501C0 |  |  |  |  | 45.6d | 0d | MECHANICAL [1602 h]; Cost |  |  | T19RK21115C0 | PT | C | 19 | RK | ME | 211 | 15 | BILL 10 | B10 | S2 | 2F | R00 | ACF07 | 211 |  | 2n | MEP |  |  |  |  |  |  |
| T19RK23021C0 |  | PT-19 ; 2nd Fix, Inst of Flexible Duct & Plenum boxes (Royal Kitchen) | 42d | 2012-08-06 | 2012-09-26 | T19RK09205C0, T19RK09501C0 |  |  |  |  | 45.6d | 0d | MECHANICAL [30 h]; Cost |  |  | T19RK23021C0 | PT | C | 19 | RK | ME | 230 | 21 | BILL 10 | B10 | S2 | 2F | R00 | ACF07 | 230 |  | 2n | MEP |  |  |  |  |  |  |
| T19RK26017C0 |  | PT-19 ; Final Fix, Inst of Ceiling rose (Royal Kitchen) | 36d | 2012-08-06 | 2012-09-19 | T19RK09501C0 |  |  |  |  | 39.6d | 0d | ELECTRICAL [61.2 h]; Cost |  |  | T19RK26017C0 | PT | C | 19 | RK | ME | 260 | 17 | BILL 10 | B10 | S2 | FF | R00 | ACF07 | 260 |  | FF | MEP |  |  |  |  |  |  |
| T19RK27002C0 |  | PT-19 ; 2nd Fix, Wiring Droppers (Royal Kitchen) | 42d | 2012-08-06 | 2012-09-26 | T19RK09501C0 |  |  |  |  | 39.6d | 0d | ELECTRICAL [392.4 h]; Cost |  |  | T19RK27002C0 | PT | C | 19 | RK | ME | 270 | 02 | BILL 10 | B10 | S2 | 2F | R00 | ACF07 | 270 |  | 2n | MEP |  |  |  |  |  |  |
| T19RK27020C0 |  | PT-19 ; 2nd Fix, Inst of ELV Equipment (Panels) (Royal Kitchen) | 66d | 2012-08-06 | 2012-10-24 | T19RK09205C0, T19RK09501C0 |  |  |  |  | 65.6d | 0d | ELECTRICAL [1819.2 h]; Cost |  |  | T19RK27020C0 | PT | C | 19 | RK | ME | 270 | 20 | BILL 10 | B10 | S2 | 2F | R00 | ACF04 | 270 |  | 2n | MEP |  |  |  |  |  | E |
| T19RK22021C0 |  | PT-19 ; Final Fix, Terminate Sanitary Ware & Appliances (Royal Kitchen) | 42d | 2012-08-14 | 2012-10-04 | T19RK22011C0, T19RK22025C0 |  |  |  |  | 118.95d | 79.35d | PLUMBING [3361.2 h]; Cost |  |  | T19RK22021C0 | PT | C | 19 | RK | ME | 220 | 21 | BILL 10 | B10 | S2 | FF | R00 | ACF07 | 220 |  | FF | MEP |  |  |  |  |  |  |
| T19RK09903C0 |  | PT-19 ; Wall Final Paint (Royal Kitchen) | 12d | 2012-08-22 | 2012-09-05 | T19RK09901C0, T19RK09905C0, T19RK09501C0 |  |  |  |  | 143.6d | 78d | WALL PAINT [153 h]; WALL PAINT [190 m2]; Cost |  |  | T19RK09903C0 | PT | C | 19 | RK | PA | 099 | 03 | BILL 10 | B10 | S2 | 02 | R00 | ACF06 | 099 |  |  |  |  | 329 | 957 |  |  |  |
| T19RK08709C0 |  | PT-19 ; Ironmongery (Royal Kitchen) | 23.5d | 2012-08-30 | 2012-09-26 | T19RK08107C0 |  |  |  |  | 137.1d | 97.5d | IRONMONGERY [420 h]; IRONMONGERY [42 no]; Cost |  |  | T19RK08709C0 | PT | C | 19 | RK | DO | 087 | 09 | BILL 10 | B10 | S2 | IM | R00 | ACF06 | 087 |  |  |  |  | 322 | 951 | 08 |  |  |
| T19RK26003C0 |  | PT-19 ; Final Fix, Inst of Light fittings (Royal Kitchen) | 48d | 2012-09-19 | 2012-11-18 | T19RK09501C0, T19RK26017C0 |  |  |  |  | 39.6d | 0d | ELECTRICAL [7815.6 h]; Cost |  |  | T19RK26003C0 | PT | C | 19 | RK | ME | 260 | 03 | BILL 10 | B10 | S2 | FF | R00 | ACF07 | 260 |  | FF | MEP |  |  |  |  |  |  |
| T19RK21113C0 |  | PT-19 ; Final Fix, Inst of Sprinklers head/ Extinguisher (Royal Kitchen) | 36d | 2012-09-26 | 2012-11-10 | T19RK09501C0, T19RK21115C0 |  |  |  |  | 45.6d | 6d | MECHANICAL [234 h]; Cost |  |  | T19RK21113C0 | PT | C | 19 | RK | ME | 211 | 13 | BILL 10 | B10 | S2 | FF | R00 | ACF07 | 211 |  | FF | MEP |  |  |  |  |  |  |
| T19RK23019C0 |  | PT-19 ; Final Fix, Inst of Grilles & Diffusers (Royal Kitchen) | 36d | 2012-09-26 | 2012-11-10 | T19RK09501C0, T19RK23021C0 |  |  |  |  | 45.6d | 6d | MECHANICAL [1498.8 h]; Cost |  |  | T19RK23019C0 | PT | C | 19 | RK | ME | 230 | 19 | BILL 10 | B10 | S2 | FF | R00 | ACF07 | 230 |  | FF | MEP |  |  |  |  |  |  |
| T19RK27030C0 |  | PT-19 ; Final Fix, Inst of ELV device (Detector/Speaker) (Royal Kitchen) | 42d | 2012-09-26 | 2012-11-18 | T19RK09501C0, T19RK27002C0 |  |  |  |  | 39.6d | 0d | ELECTRICAL [3571.2 h]; Cost |  |  | T19RK27030C0 | PT | C | 19 | RK | ME | 270 | 30 | BILL 10 | B10 | S2 | FF | R00 | ACF07 | 270 |  | FF | MEP |  |  |  |  |  |  |
| T19RK09701C0 |  | PT-19 ; Wall finishes (ST, WD, WC) (Royal Kitchen) | 36d | 2012-10-24 | 2012-12-10 | T19RK26011C0, T19RK27020C0, T19CO04407C0, T19RK09501C0, T19RK09601C0 |  |  |  |  | 65.6d | 0d | ASSORTED WALL FINISH [253 h]; ASSORTED WALL FINISH [289 m2]; Cost |  |  | T19RK09701C0 | PT | C | 19 | RK | WF | 097 | 01 | BILL 10 | B10 | S2 | 01 | R00 | ACF06 | 097 |  |  |  |  | 105 | 1002 |  |  |  |
| T19RK01006C0 |  | PT-19 ; 2nd, Ceiling Inspection by Consultants (Royal Kitchen) | 4.5d | 2012-11-18 | 2012-11-22 | T19RK21115C0, T19RK23009C0, T19RK23011C0, T19RK23015C0, T19RK27002C0, T19RK09501C0, T19RK21113C0, T19RK23019C0, T19RK26015C0, T19RK26017C0, T19RK26003C0, T19RK27030C0 |  |  |  |  | 39.6d | 0d | Labor General [1.2 h]; Cost |  |  | T19RK01006C0 | PT | C | 19 | RK | ME | 010 | 06 | BILL 10 | B10 | S2 | CI | R00 | ACF07 | 010 |  | 2n | MEP |  |  |  |  |  |  |
| T19RK09503C0 |  | PT-19 ; Ceiling closure - ACT/Gypsum (Royal Kitchen) | 21.5d | 2012-11-22 | 2012-12-19 | T19RK01006C0, T19RK21115C0, T19RK26005C0, T19RK27001C0, T19RK27002C0, TAFOA09513C1 FF, T19ER27022C0, T19ER21120C0, T19RK23021C0, T19RK26007C0 |  |  |  |  | 39.6d | 0d | ASSORTED CEILING FINISH [251.53 h]; CEILING GYPSUM [62.52 h]; ASSORTED CEILING FINISH [409 m2]; CEILING GYPSUM [190 m2]; Cost |  |  | T19RK09503C0 | PT | C | 19 | RK | CE | 095 | 03 | BILL 10 | B10 | S2 | 02 | R00 | ACF06 | 095 |  |  |  |  | 324 | 953 |  |  |  |
| T19RK11001C0 |  | PT-19 ; Wall Protection (WP, CG, WG, FCG) (Royal Kitchen) | 12d | 2012-12-10 | 2012-12-24 | T19RK09701C0, T19RK09903C0 |  |  |  |  | 65.6d | 26d | FF&E [13 h]; Cost |  |  | T19RK11001C0 | PT | C | 19 | RK | WF | 110 | 01 | BILL 10 | B10 | S2 | 06 | R00 | ACF08 | b |  |  |  |  | 326 | 1001 |  |  |  |
| T19RK09907C0 |  | PT-19 ; Ceiling Final paint (Royal Kitchen) | 10d | 2012-12-19 | 2012-12-31 | T19RK09601C0, T19RK09905C0, T19RK09503C0 |  |  |  |  | 59.6d | 20d | CEILING PAINT [10 h]; CEILING PAINT [11 m2]; Cost |  |  | T19RK09907C0 | PT | C | 19 | RK | PA | 099 | 07 | BILL 10 | B10 | S2 | 02 | R00 | ACF06 | 099 |  |  |  |  | 331 | 959 |  |  |  |
| T19RK11003C0 |  | PT-19 ; FF & E (Royal Kitchen) | 18d | 2012-12-19 | 2013-01-10 | T19RK09601C0, T19RK09503C0 |  |  |  |  | 51.6d | 12d | FF&E [473 h]; Cost |  |  | T19RK11003C0 | PT | C | 19 | RK | WO | 110 | 03 | BILL 10 | B10 | S2 | 06 | R00 | ACF08 | a |  |  |  |  | 333 | 961 |  |  |  |
| T19RK22027C0 |  | PT-19 ; Final Fix, Inst of All drain (Royal Kitchen) | 18d | 2012-12-19 | 2013-01-10 | T19RK09305C0, T19RK09503C0 |  |  |  |  | 39.6d | 0d | PLUMBING [1378.8 h]; Cost |  |  | T19RK22027C0 | PT | C | 19 | RK | ME | 220 | 27 | BILL 10 | B10 | S2 | FF | R00 | ACF07 | 220 |  | FF | MEP |  |  |  |  |  |  |
| T19RK26019C0 |  | PT-19 ; Final Fix, Inst of Switch/Sockets (Royal Kitchen) | 18d | 2012-12-19 | 2013-01-10 | T19RK09901C0, T19RK09503C0 |  |  |  |  | 39.6d | 0d | ELECTRICAL [362.4 h]; Cost |  |  | T19RK26019C0 | PT | C | 19 | RK | ME | 260 | 19 | BILL 10 | B10 | S2 | FF | R00 | ACF07 | 260 |  | FF | MEP |  |  |  |  |  |  |

| ID | WBS | Activity | Duration | Start | Finish | Predecessors | Complete | Remaining | Planned start | Planned finish | Total float | Free float | Resources | Cost | Actual cost | change id | CCAD BUILDING(SET) | CCAD PHASE(SET) | CCAD FLOOR(SET) | CCAD ZONE(SET) | CCAD WORK(SET) | CCAD SECTION(SET) | CCAD SERIAL No.(SET) | CCAD CBS(SET) | CCAD BILL(SET) | CCAD HANDOVER(SET) | CCAD TAG(SET) | CCAD REV(SET) | CCADACF (SET) | CCAD SSCF | CCAD SUB ZONE MEP(SET) | CCAD CSA | Act Selector % | Change Order # | NEW ACTIVITY ID | CCAD DIVISION(SET) | CCAD MEQ | TO BE DELETED |
| --- | --- | --- | --- | --- | --- | --- | --- | --- | --- | --- | --- | --- | --- | --- | --- | --- | --- | --- | --- | --- | --- | --- | --- | --- | --- | --- | --- | --- | --- | --- | --- | --- | --- | --- | --- | --- | --- | --- |
|  | 10 | **Precommissioning Tesing & snagging (Royal Kitchen)** |  | 2013-01-10 | 2013-02-24 |  |  |  |  |  |  |  |  |  |  |  |  |  |  |  |  |  |  |  |  |  |  |  |  |  |  |  |  |  |  |  |  |  |
| T19TS01804C0 |  | PT-19 ; MEP de-snag, FIREM sign-off | 12d | 2013-01-10 | 2013-01-26 | T19RK22025C0, T19RK22027C0, T19RK22021C0, T19RK26019C0 |  |  |  |  | 39.6d | 0d | TESTING & COMMISSIONING [510 h]; Cost |  |  | T19TS01801C0 | PT | C | 19 | TS | SC | 018 | 01 | BILL 10 | B10 | S2 | 01 | R00 | ACF07 | 018 |  |  |  |  |  |  |  |  |
| T19TS01809C0 |  | PT-19 ; Touch-up & Clean / JV inspection /CIR /De-snag | 18d | 2013-01-26 | 2013-02-16 | T19RK05501C0, T19RK08709C0, T19RK09305C0, T19RK09601C0, T19RK09701C0, T19RK09903C0, T19RK09907C0, T19RK11001C0, T19RK11003C0, T19RK11004C0, T19RK11071C0, T19TS01804C0, T19RK09503C0 |  |  |  |  | 39.6d | 0d | TESTING & COMMISSIONING [128 h]; Cost |  |  | T19TS01802C0 | PT | C | 19 | TS | SC | 018 | 02 | BILL 10 | B10 | S2 | 02 | R00 | ACF07 | 018 |  |  |  |  |  |  |  |  |
| T19TS01814C0 |  | PT-19 ; Consultant's final de-snag inspection | 7d | 2013-02-16 | 2013-02-24 | T19TS01809C0, T19TS01815C0 |  |  |  |  | 39.6d | 10.1d | Labor General [1 h]; Cost |  |  | T19TS01803C0 | PT | C | 19 | TS | SC | 018 | 03 | BILL 10 | B10 | S2 | 03 | R00 | ACF07 | 018 |  |  |  |  |  |  |  |  |
|  | 04 | **Mech-2** |  | 2011-09-05 | 2013-01-19 |  |  |  |  |  |  |  |  |  |  |  |  |  |  |  |  |  |  |  |  |  |  |  |  |  |  |  |  |  |  |  |  |  |
| T19M222011C0 |  | PT-19 ; 1st Fix, Inst of Drainage pipe (Mech RM-2) | 48d | 2011-09-05 A | 2012-02-08 | T19M223001C0, T19M226001C0 SS+14d | 5% | 45.6d | 2011-12-11 | 2012-02-06 | 124.72d | 0d | PLUMBING [1378.8 h]; Cost [74493.8 AED] | 74,493.83 | 3,724.69 | T19M222011C0 | PT | C | 19 | M2 | ME | 220 | 11 | BILL 10 | B10 | S2 | 1F | R00 | ACF04 | 220 | 1S | MEP | M1F |  |  |  |  |  |
| T19M223001C0 |  | PT-19 ; 1st Fix, Inst. of Supports for MEP (Mech RM-2) | 36d | 2011-09-05 A | 2011-11-28 | T19CO07807C0 | 10% | 32.4d | 2011-10-08 | 2011-11-21 | 102.72d | 0d | MECHANICAL [4027.2 h]; Cost [45150.4 AED] | 45,150.38 | 4,515.04 | T19M223001C0 | PT | C | 19 | M2 | ME | 230 | 01 | BILL 10 | B10 | S2 | 1F | R00 | ACF04 | 230 | 1S | MEP | M1F |  |  |  |  |  |
| T19M209201C0 |  | PT-19 ; Metal Studs (Mech RM-2) | 20d | 2011-10-31 | 2011-11-28 | T19M223001C0 SS, T19M223001C0 FF |  |  |  |  | 102.72d | 0d | PARTITIONS [1270 h]; PARTITIONS - Metal Studs [176 m]; Cost |  |  | T19M209201C0 | PT | C | 19 | M2 | PT | 092 | 01 | BILL 10 | B10 | S2 | 1F | R00 | ACF06 | 092 |  | GP | PMS |  |  |  |  |  |
| T19M209203C0 |  | PT-19 ; Partitions 1st face (Mech RM-2) | 33d | 2011-11-28 | 2012-01-08 | T19M209201C0 |  |  |  |  | 219.72d | 41d | PARTITIONS [176 m]; PARTITIONS [983 h]; Cost |  |  | T19M209203C0 | PT | C | 19 | M2 | PT | 092 | 03 | BILL 10 | B10 | S2 | 2F | R00 | ACF06 | 092 |  | GP | P1F | 314 | 1463 |  |  |  |
| T19M226001C0 |  | PT-19 ; 1st Fix, Inst of Trunking/Conduiting (Mech RM-2) | 48d | 2011-11-28 | 2012-01-25 | T19M223001C0 |  |  |  |  | 124.72d | 0d | ELECTRICAL [734.4 h]; Cost |  |  | T19M226001C0 | PT | C | 19 | M2 | ME | 260 | 01 | BILL 10 | B10 | S2 | 1F | R00 | ACF04 | 260 | 1S | MEP | M1F |  |  |  |  |  |
| T19M222006C0 |  | PT-19 ; 1st Fix, Inst of Water supply pipe (Mech RM-2) | 60d | 2011-12-15 | 2012-02-26 | T19M222011C0 SS+10d, T19M223001C0 |  |  |  |  | 124.72d | 0d | PLUMBING [4548 h]; Cost |  |  | T19M222006C0 | PT | C | 19 | M2 | ME | 220 | 06 | BILL 10 | B10 | S2 | 1F | R00 | ACF04 | 220 | 1S | MEP | M1F |  |  |  |  |  |
| T19M208101C0 |  | PT-19 ; Metal Door Frames (Mech RM-2) | 24d | 2011-12-28 | 2012-01-25 | T19M209201C0, GNHE08101C0 FS+126d |  |  |  |  | 240.12d | 61.4d | METAL DOORS [93 h]; Cost |  |  | T19M208101C0 | PT | C | 19 | M2 | DO | 081 | 01 | BILL 10 | B10 | S2 | DF | R00 | ACF06 | 081 |  |  |  | 316 | 1465 | 08 |  |  |
| T19M221111C0 |  | PT-19 ; 1st Fix, Inst of Sprinkler main pipe (Mech RM-2) | 48d | 2011-12-29 | 2012-02-26 | T19M222006C0 SS+12d, T19M223001C0 |  |  |  |  | 158.72d | 0d | MECHANICAL [853.2 h]; Cost |  |  | T19M221111C0 | PT | C | 19 | M2 | ME | 211 | 11 | BILL 10 | B10 | S2 | 1F | R00 | ACF04 | 211 | 1S | MEP | M1F |  |  |  |  |  |
| T19M223019C0 |  | PT-19 ; 1st Fix, Inst of CHW pipe (Mech RM-2) | 54d | 2012-01-16 | 2012-03-20 | T19M221111C0 SS+14d, T19M223001C0 |  |  |  |  | 158.72d | 24.1d | MECHANICAL [2467.2 h]; Cost |  |  | T19M223019C0 | PT | C | 19 | M2 | ME | 230 | 19 | BILL 10 | B10 | S2 | 1F | R00 | ACF04 | 230 | 1S | MEP | M1F |  |  |  |  |  |
| T19M223013C0 |  | PT-19 ; 2nd Fix, Inst of Equipment (AHU) (Mech RM-2) | 90d | 2012-01-23 | 2012-05-08 | T19CO07807C0, T19M209201C0 FS+6d, T19M222006C0 FF, T19M222011C0 FF, T09M223013C0 |  |  |  |  | 62.62d | 0d | MECHANICAL [32556 h]; Cost |  |  | T19M223013C0 | PT | C | 19 | M2 | ME | 230 | 13 | BILL 10 | B10 | S2 | 2F | R00 | ACF04 | 230 | 2n | MEP |  |  |  |  | H |  |
| T19M223005C0 |  | PT-19 ; 1st Fix, Inst of Ducting (Mech RM-2) | 60d | 2012-02-07 | 2012-04-17 | T19M223001C0, T19M223013C0 SS+12d |  |  |  |  | 80.62d | 0d | MECHANICAL [8022 h]; Cost |  |  | T19M223005C0 | PT | C | 19 | M2 | ME | 230 | 05 | BILL 10 | B10 | S2 | 1F | R00 | ACF04 | 230 | 1S | MEP | M1F |  |  |  |  |  |
| T19M209205C0 |  | PT-19 ; Partitions Closing (Mech RM-2) | 36d | 2012-02-26 | 2012-04-08 | T19M209201C0, T19M209203C0, T19M222006C0, T19M222011C0, TAFOA09214C1 FF, T19M208101C0 FF |  |  |  |  | 178.72d | 0d | PARTITIONS [175.6 m]; PARTITIONS [1266 h]; Cost |  |  | T19M209205C0 | PT | C | 19 | M2 | PT | 092 | 05 | BILL 10 | B10 | S2 | FF | R00 | ACF06 | 092 |  | GP | P2F | 315 | 1464 |  |  |  |
| T19M221119C0 |  | PT-19 ; 1st Fix, Inst of Sprinkler branch pipe (Mech RM-2) | 48d | 2012-02-26 | 2012-04-22 | T19M221111C0 |  |  |  |  | 172.72d | 0d | MECHANICAL [561.6 h]; Cost |  |  | T19M221119C0 | PT | C | 19 | M2 | ME | 211 | 19 | BILL 10 | B10 | S2 | 1F | R00 | ACF04 | 211 | 1S | MEP | M1F |  |  |  |  |  |
| T19M209603C0 |  | PT-19 ; Raised Access Floor (Mech RM-2) | 12d | 2012-04-08 | 2012-04-22 | T19M209205C0 |  |  |  |  | 190.72d | 56.1d | ASSORTED FLOOR FINISH [72 h]; Cost |  |  | T19M209603C0 | PT | C | 19 | M2 | FF | 096 | 03 | BILL 10 | B10 | S2 | 04 | R00 | ACF06 | AF |  |  |  | 326 | 1501 |  |  | RENAME |
| T19M209901C0 |  | PT-19 ; Wall Prime & 1st coat (Mech RM-2) | 12d | 2012-04-08 | 2012-04-22 | T19CO04003C0, T19M209205C0 |  |  |  |  | 202.72d | 0d | WALL PAINT [236 h]; WALL PAINT [294 m2]; Cost |  |  | T19M209901C0 | PT | C | 19 | M2 | PA | 099 | 01 | BILL 10 | B10 | S2 | 01 | R00 | ACF06 | 099 |  |  |  | 328 | 1469 |  |  |  |
| T19M221123C0 |  | PT-19 ; Final Fix, Inst of Fire Extinguishers/FHC (Mech RM-2) | 42d | 2012-04-08 | 2012-05-27 | T19M209205C0 |  |  |  |  | 220.72d | 158.1d | MECHANICAL [3681.6 h]; Cost |  |  | T19M221123C0 | PT | C | 19 | M2 | ME | 211 | 23 | BILL 10 | B10 | S2 | FF | R00 | ACF07 | 211 | FF | MEP |  |  |  |  |  |  |
| T19M226015C0 |  | PT-19 ; Final Fix, Inst of Ceiling rose (Mech RM-2) | 36d | 2012-04-08 | 2012-05-20 | T19M209205C0 |  |  |  |  | 178.72d | 0d | ELECTRICAL [61.2 h]; Cost |  |  | T19M226015C0 | PT | C | 19 | M2 | ME | 260 | 15 | BILL 10 | B10 | S2 | FF | R00 | ACF07 | 260 | FF | MEP |  |  |  |  |  |  |
| T19M223015C0 |  | PT-19 ; 2nd Fix, Inst of VCD's/FD's (Mech RM-2) | 42d | 2012-04-17 | 2012-06-05 | T19M223005C0 |  |  |  |  | 140.62d | 6d | MECHANICAL [1753.2 h]; Cost |  |  | T19M223015C0 | PT | C | 19 | M2 | ME | 230 | 15 | BILL 10 | B10 | S2 | 2F | R00 | ACF07 | 230 | 2n | MEP |  |  |  |  |  |  |
| T19M223017C0 |  | PT-19 ; 2nd Fix, Insulation of CHW pipe & Duct (Mech RM-2) | 48d | 2012-04-17 | 2012-06-12 | T19M223005C0, T19M223019C0 |  |  |  |  | 134.62d | 0d | MECHANICAL [3064.8 h]; Cost |  |  | T19M223017C0 | PT | C | 19 | M2 | ME | 230 | 17 | BILL 10 | B10 | S2 | 2F | R00 | ACF07 | 230 | 2n | MEP |  |  |  |  |  |  |
| T19M227010C0 |  | PT-19 ; 1st Fix, Inst of Trunking for ELV system (Mech RM-2) | 48d | 2012-04-17 | 2012-06-12 | T19M223005C0 |  |  |  |  | 80.62d | 18d | ELECTRICAL [1512 h]; Cost |  |  | T19M227010C0 | PT | C | 19 | M2 | ME | 270 | 10 | BILL 10 | B10 | S2 | 1F | R00 | ACF04 | 270 | 1S | MEP | M1F |  |  |  |  |  |
| T19M209903C0 |  | PT-19 ; Wall - Final Paint (Mech RM-2) | 12d | 2012-04-22 | 2012-05-06 | T19M209901C0 |  |  |  |  | 220.72d | 0d | WALL PAINT [127 h]; WALL PAINT [158 m2]; Cost |  |  | T19M209903C0 | PT | C | 19 | M2 | PA | 099 | 03 | BILL 10 | B10 | S2 | 02 | R00 | ACF06 | 099 |  |  |  | 329 | 1470 |  |  |  |
| T19M221115C0 |  | PT-19 ; 2nd Fix, Inst of Sprinkler droppers (Mech RM-2) | 42d | 2012-04-22 | 2012-06-10 | T19M209205C0, T19M221119C0 |  |  |  |  | 172.72d | 0d | MECHANICAL [1602 h]; Cost |  |  | T19M221115C0 | PT | C | 19 | M2 | ME | 211 | 15 | BILL 10 | B10 | S2 | 2F | R00 | ACF07 | 211 | 2n | MEP |  |  |  |  |  |  |
| T19M226017C0 |  | PT-19 ; Final Fix, Inst of Switch/Sockets (Mech RM-2) | 12d | 2012-05-06 | 2012-05-20 | T19M209901C0, T19M209903C0 |  |  |  |  | 226.72d | 164.1d | ELECTRICAL [362.4 h]; Cost |  |  | T19M226017C0 | PT | C | 19 | M2 | ME | 260 | 17 | BILL 10 | B10 | S2 | FF | R00 | ACF07 | 260 | FF | MEP |  |  |  |  |  |  |
| T19M207101C0 |  | PT-19 ; Waterproofing (Mech RM-2) | 15d | 2012-05-08 | 2012-05-26 | T19M223013C0 |  |  |  |  | 155.75d | 0d | THERMAL & MOISTURE [304 h]; THERMAL & MOISTURE [1999 m2]; Cost |  |  | I05ME09901C0 | PT | C | 19 | M2 | FF | 071 | 01 | BILL 10 | B10 | S2 | 01 | R00 | ACF03 | 071 |  |  |  | 328 | 1469 |  |  |  |
| T19M221117C0 |  | PT-19 ; 2nd Fix, Inst of Zone Control Valve (Mech RM-2) | 42d | 2012-05-08 | 2012-06-27 | T19M209603C0 FF, T19M223013C0, T19M223019C0 |  |  |  |  | 134.62d | 54d | MECHANICAL [832.8 h]; Cost |  |  | T19M221117C0 | PT | C | 19 | M2 | ME | 211 | 17 | BILL 10 | B10 | S2 | 2F | R00 | ACF07 | 211 | 2n | MEP |  |  |  |  |  |  |
| T19M223011C0 |  | PT-19 ; 2nd Fix, Inst of Equipment (FCU,FAN,PUMP) (Mech RM-2) | 90d | 2012-05-08 | 2012-08-25 | T19M223013C0 |  |  |  |  | 62.62d | 0d | MECHANICAL [5396.4 h]; Cost |  |  | T19M223011C0 | PT | C | 19 | M2 | ME | 230 | 11 | BILL 10 | B10 | S2 | 2F | R00 | ACF04 | 230 | 2n | MEP |  |  |  |  | H |  |
| T19M226009C0 |  | PT-19 ; 2nd Fix, Inst of Equipment (DB, TR, SG) (Mech RM-2) | 90d | 2012-05-08 | 2012-08-25 | T19M223013C0 |  |  |  |  | 86.62d | 6d | ELECTRICAL [2133.6 h]; Cost |  |  | T19M226009C0 | PT | C | 19 | M2 | ME | 260 | 09 | BILL 10 | B10 | S2 | 2F | R00 | ACF04 | 260 | 2n | MEP |  |  |  |  | E |  |
| T19M226011C0 |  | PT-19 ; 1st Fix, Inst of Cable Tray (Mech RM-2) | 48d | 2012-05-08 | 2012-07-04 | T19M223013C0 |  |  |  |  | 62.62d | 0d | ELECTRICAL [399.6 h]; Cost |  |  | T19M226011C0 | PT | C | 19 | M2 | ME | 260 | 11 | BILL 10 | B10 | S2 | 1F | R00 | ACF04 | 260 | 1S | MEP | M1F |  |  |  |  |  |
| T19M227020C0 |  | PT-19 ; 2nd Fix, Inst of ELV Equipment (Panels) (Mech RM-2) | 66d | 2012-05-08 | 2012-07-25 | T19M223013C0 |  |  |  |  | 110.62d | 30d | ELECTRICAL [1819.2 h]; Cost |  |  | T19M227020C0 | PT | C | 19 | M2 | ME | 270 | 20 | BILL 10 | B10 | S2 | 2F | R00 | ACF04 | 270 | 2n | MEP |  |  |  |  | E |  |
| T19M226019C0 |  | PT-19 ; Final Fix, Inst of Light fittings (Mech RM-2) | 48d | 2012-05-20 | 2012-07-16 | T19M209901C0, T19M226015C0 |  |  |  |  | 178.72d | 116.1d | ELECTRICAL [7815.6 h]; Cost |  |  | T19M226019C0 | PT | C | 19 | M2 | ME | 260 | 19 | BILL 10 | B10 | S2 | FF | R00 | ACF07 | 260 | FF | MEP |  |  |  |  |  |  |
| T19M209601C0 |  | PT-19 ; Floor Finishes (Mech RM-2) | 33.88d | 2012-05-26 | 2012-07-05 | T19M207101C0, T19M209205C0 |  |  |  |  | 155.75d | 0d | ASSORTED FLOOR FINISH [11824 h]; ASSORTED FLOOR FINISH [6567 m2]; Cost |  |  | T19M209601C0 | PT | C | 19 | M2 | FF | 096 | 01 | BILL 10 | B10 | S2 | 01 | R00 | ACF06 | FF |  |  |  | 326 | 1501 |  |  |  |
| T19M221121C0 |  | PT-19 ; Final Fix, Inst of Sprinklers head (Mech RM-2) | 36d | 2012-06-10 | 2012-07-23 | T19M221115C0 |  |  |  |  | 172.72d | 110.1d | MECHANICAL [234 h]; Cost |  |  | T19M221121C0 | PT | C | 19 | M2 | ME | 211 | 21 | BILL 10 | B10 | S2 | FF | R00 | ACF07 | 211 | FF | MEP |  |  |  |  |  |  |
| T19M223023C0 |  | PT-19 ; Final Fix, Inst of Flexible Duct & Plenum boxes (Mech RM-2) | 36d | 2012-06-12 | 2012-07-25 | T19M223015C0, T19M223017C0 |  |  |  |  | 134.62d | 66d | MECHANICAL [30 h]; Cost |  |  | T19M223023C0 | PT | C | 19 | M2 | ME | 230 | 23 | BILL 10 | B10 | S2 | FF | R00 | ACF07 | 230 | FF | MEP |  |  |  |  |  |  |
| T19M226007C0 |  | PT-19 ; 2nd Fix, Cable Pulling (Mech RM-2) | 48d | 2012-07-04 | 2012-09-01 | T19M226011C0 |  |  |  |  | 62.62d | 0d | ELECTRICAL [2683.2 h]; Cost |  |  | T19M226007C0 | PT | C | 19 | M2 | ME | 260 | 07 | BILL 10 | B10 | S2 | 2F | R00 | ACF07 | 260 | 2n | MEP |  |  |  |  |  |  |
| T19M227001C0 |  | PT-19 ; 1st Fix, Wiring/ Cabling work (Mech RM-2) | 48d | 2012-07-04 | 2012-09-01 | T19M226001C0, T19M226011C0, T19M227010C0 |  |  |  |  | 62.62d | 0d | ELECTRICAL [392.4 h]; Cost |  |  | T19M227001C0 | PT | C | 19 | M2 | ME | 270 | 01 | BILL 10 | B10 | S2 | 1F | R00 | ACF04 | 270 | 1S | MEP | M1F |  |  |  |  |  |
| T19M208105C0 |  | PT-19 ; Metal Doors (Mech RM-2) | 20d | 2012-07-05 | 2012-07-29 | T19M208101C0, T19M209601C0, T19M209901C0 |  |  |  |  | 155.75d | 0d | METAL DOORS [380 h]; METAL DOORS [38 no]; Cost |  |  | T19M208105C0 | PT | C | 19 | M2 | DO | 081 | 05 | BILL 10 | B10 | S2 | DR | R00 | ACF06 | 081 |  |  |  | 317 | 1466 | 08 |  |  |
| T19M222003C0 |  | PT-19 ; Final Fix, Inst of All drain (Mech RM-2) | 18d | 2012-07-05 | 2012-07-26 | T19M209601C0, T19M209903C0 |  |  |  |  | 169.75d | 107.12d | PLUMBING [1378.8 h]; Cost |  |  | T19M222003C0 | PT | C | 19 | M2 | ME | 220 | 03 | BILL 10 | B10 | S2 | FF | R00 | ACF07 | 220 | FF | MEP |  |  |  |  |  |  |
| T19M208709C0 |  | PT-19 ; Ironmongery (Mech RM-2) | 24d | 2012-07-29 | 2012-08-28 | T19M208105C0 |  |  |  |  | 155.75d | 93.12d | IRONMONGERY [350 h]; IRONMONGERY [35 no]; Cost |  |  | T19M208709C0 | PT | C | 19 | M2 | DO | 087 | 09 | BILL 10 | B10 | S2 | IM | R00 | ACF06 | 087 |  |  |  | 322 | 1467 | 08 |  |  |
| T19M223009C0 |  | PT-19 ; 2nd Fix, Inst of VAV'S CHW connection (Mech RM-2) | 42d | 2012-08-25 | 2012-10-13 | T19M223011C0 |  |  |  |  | 62.62d | 0d | MECHANICAL [1450.8 h]; Cost |  |  | T19M223009C0 | PT | C | 19 | M2 | ME | 230 | 09 | BILL 10 | B10 | S2 | 2F | R00 | ACF07 | 230 | 2n | MEP |  |  |  |  |  |  |
| T19M226005C0 |  | PT-19 ; 2nd Fix, Wiring for Power/Lighting/Emergency (Mech RM-2) | 42d | 2012-09-01 | 2012-10-20 | T19M226001C0, T19M226007C0, T19M226011C0, T19M227001C0, T19M227010C0 |  |  |  |  | 62.62d | 0d | ELECTRICAL [392.4 h]; Cost |  |  | T19M226005C0 | PT | C | 19 | M2 | ME | 260 | 05 | BILL 10 | B10 | S2 | 2F | R00 | ACF07 | 260 | 2n | MEP |  |  |  |  |  |  |
| T19M227003C0 |  | PT-19 ; Final Fix, BMS connection work to Equipment (Mech RM-2) | 60d | 2012-09-01 | 2012-11-12 | T19M221117C0, T19M223011C0, T19M223013C0, T19M223015C0, T19M226009C0, T19M227001C0, T19M227020C0 |  |  |  |  | 80.62d | 18d | ELECTRICAL [29564.4 h]; Cost |  |  | T19M227003C0 | PT | C | 19 | M2 | ME | 270 | 03 | BILL 10 | B10 | S2 | FF | R00 | ACF07 | 270 | FF | MEP |  |  |  |  |  |  |
| T19M223021C0 |  | PT-19 ; Final Fix, Inst of Grilles & Diffusers (Mech RM-2) | 36d | 2012-10-13 | 2012-11-27 | T19M223023C0, T19M223009C0 |  |  |  |  | 68.62d | 6d | MECHANICAL [1498.8 h]; Cost |  |  | T19M223021C0 | PT | C | 19 | M2 | ME | 230 | 21 | BILL 10 | B10 | S2 | FF | R00 | ACF07 | 230 | FF | MEP |  |  |  |  |  |  |
| T19M227030C0 |  | PT-19 ; Final Fix, Inst of ELV device (Detector/Speaker) (Mech RM-2) | 42d | 2012-10-13 | 2012-12-05 | T19M209901C0, T19M223009C0, T19M227020C0, T19M227003C0 SS+6d |  |  |  |  | 62.62d | 0d | ELECTRICAL [3571.2 h]; Cost |  |  | T19M227030C0 | PT | C | 19 | M2 | ME | 270 | 30 | BILL 10 | B10 | S2 | FF | R00 | ACF07 | 270 | FF | MEP |  |  |  |  |  |  |
| T19M226013C0 |  | PT-19 ; Final Fix, Termination & Gladding of Cables (Mech RM-2) | 36d | 2012-10-20 | 2012-12-05 | T19M209205C0, T19M226005C0 |  |  |  |  | 62.62d | 0d | ELECTRICAL [148.8 h]; Cost |  |  | T19M226013C0 | PT | C | 19 | M2 | ME | 260 | 13 | BILL 10 | B10 | S2 | FF | R00 | ACF07 | 260 | FF | MEP |  |  |  |  |  |  |

| ID | WBS | Activity | Duration | Start | Finish | Predecessors | Complete | Remaining | Planned start | Planned finish | Total float | Free float | Resources | Cost | Actual cost | change id | CCAD BUILDING(SET) | CCAD PHASE(SET) | CCAD FLOOR(SET) | CCAD ZONE(SET) | CCAD WORK(SET) | CCAD SECTION(SET) | CCAD SERIAL No.(SET) | CCAD CBS(SET) | CCAD BILL(SET) | CCAD HANDOVER(SET) | CCAD TAG(SET) | CCAD REV(SET) | CCADACF (SET) | CCAD SSCF | CCAD SUB ZONE MEP(SET) | CCAD CSA | Act Selector % | Change Order # | NEW ACTIVITY ID | CCAD DIVISION(SET) | CCAD MEQ | TO BE DELETED |
| --- | --- | --- | --- | --- | --- | --- | --- | --- | --- | --- | --- | --- | --- | --- | --- | --- | --- | --- | --- | --- | --- | --- | --- | --- | --- | --- | --- | --- | --- | --- | --- | --- | --- | --- | --- | --- | --- | --- |
|  | 10 | **Precommissioning Tesing & snagging (Mech-2)** |  | 2012-12-05 | 2013-01-19 |  |  |  |  |  |  |  |  |  |  |  |  |  |  |  |  |  |  |  |  |  |  |  |  |  |  |  |  |  |  |  |  |  |
| T19TS01805C0 |  | PT-19 ; MEP de-snag, FIREM sign-off | 12d | 2012-12-05 | 2012-12-19 | T19M221123C0, T19M226015C0, T19M226017C0, T19M226019C0, T19M222003C0, T19M223023C0, T19M227030C0, T19M227003C0, T19M221121C0, T19M223021C0, T19M226013C0, T19CO04406C0 |  |  |  |  | 62.62d | 0d | TESTING & COMMISSIONING [510 h]; Cost |  |  | T19TS01801C0 | PT | C | 19 | TS | SC | 018 | 01 | BILL 10 | B10 | S2 | 01 | R00 | ACF07 | 018 |  |  |  |  |  |  |  |  |
| T19TS01810C0 |  | PT-19 ; Touch-up & Clean / JV inspection /CIR /De-snag | 18d | 2012-12-19 | 2013-01-10 | T19M208709C0, T19M209601C0, T19M209603C0, T19M209903C0, T19TS01805C0, T19CO04412C0, T19CO04413C0 |  |  |  |  | 62.62d | 0d | TESTING & COMMISSIONING [128 h]; Cost |  |  | T19TS01802C0 | PT | C | 19 | TS | SC | 018 | 02 | BILL 10 | B10 | S2 | 02 | R00 | ACF07 | 018 |  |  |  |  |  |  |  |  |
| T19TS01815C0 |  | PT-19 ; Consultant's final de-snag inspection | 6.88d | 2013-01-10 | 2013-01-19 | T19TS01810C0, T19TS01813C0 |  |  |  |  | 62.62d | 23.02d | Labor General [1 h]; Cost |  |  | T19TS01803C0 | PT | C | 19 | TS | SC | 018 | 03 | BILL 10 | B10 | S2 | 03 | R00 | ACF07 | 018 |  |  |  |  |  |  |  |  |
|  | 05 | **Trans RM / CV RM** |  | 2011-09-05 | 2012-10-13 |  |  |  |  |  |  |  |  |  |  |  |  |  |  |  |  |  |  |  |  |  |  |  |  |  |  |  |  |  |  |  |  |  |
| T19ER23010C0 |  | PT-19 ; 1st Fix, Inst. of Supports for MEP (Elec RM) | 36d | 2011-09-05 A | 2011-11-28 | T19CO07807C0 | 10% | 32.4d | 2011-10-08 | 2011-11-21 | 25.6d | 0d | MECHANICAL [800.4 h]; Cost [45150.4 AED] | 45,150.38 | 4,515.04 | T19ER23010C0 | PT | C | 19 | ER | ME | 230 | 10 | BILL 10 | B10 | S2 | 1F | R00 | ACF04 | 230 | 1S | MEP | M1F |  |  |  |  |  |
| T19ER26010C0 |  | PT-19 ; 1st Fix, Inst of Trunking/Conduiting (Elec RM) | 48d | 2011-09-05 A | 2012-01-22 | T19CO07807C0, T19ER23010C0 | 5% | 45.6d | 2011-11-22 | 2012-01-19 | 40d | 0d | ELECTRICAL [734.4 h]; Cost [37790.1 AED] | 37,790.1 | 1,889.5 | T19ER26010C0 | PT | C | 19 | ER | ME | 260 | 10 | BILL 10 | B10 | S2 | 1F | R00 | ACF04 | 260 | 1S | MEP | M1F |  |  |  |  |  |
| T19ER09201C0 |  | PT-19 ; Metal Studs - Block (Elec RM) | 24d | 2011-10-26 | 2011-11-28 | T19CO07807C0, T19ER23010C0 SS, T19ER23010C0 FF |  |  |  |  | 44.6d | 0d | PARTITIONS [173 h]; PARTITIONS - Metal Studs [176 m]; Cost |  |  | T19M209201C0 | PT | C | 19 | M2 | PT | 092 | 01 | BILL 10 | B10 | S2 | 1F | R00 | ACF06 | 092 |  | GP | PMS |  |  |  |  |  |
| T19ER09203C0 |  | PT-19 ; Partitions 1st face - Block (Elec RM) | 24d | 2011-11-28 | 2011-12-27 | T19ER09201C0 |  |  |  |  | 44.6d | 18.6d | PARTITIONS [24 m]; PARTITIONS [129 h]; Cost |  |  | T19ER09203C0 | PT | C | 19 | ER | PT | 092 | 03 | BILL 10 | B10 | S2 | 2F | R00 | ACF06 | 092 |  | GP | P1F | 314 | 1373 |  |  |  |
| T19ER23012C0 |  | PT-19 ; 1st Fix, Inst of CHW pipe (Elec RM) | 48d | 2011-11-28 | 2012-01-25 | T19ER23010C0 |  |  |  |  | 25.6d | 0d | MECHANICAL [2467.2 h]; Cost |  |  | T19ER23012C0 | PT | C | 19 | ER | ME | 230 | 12 | BILL 10 | B10 | S2 | 1F | R00 | ACF04 | 230 | 1S | MEP | M1F |  |  |  |  |  |
| T19ER23014C0 |  | PT-19 ; 1st Fix, Inst of Ducting (Elec RM) | 48d | 2011-11-28 | 2012-01-25 | T19ER23010C0 |  |  |  |  | 31.6d | 0d | MECHANICAL [8022 h]; Cost |  |  | T19ER23014C0 | PT | C | 19 | ER | ME | 230 | 14 | BILL 10 | B10 | S2 | 1F | R00 | ACF04 | 230 | 1S | MEP | M1F |  |  |  |  |  |
| T19ER27010C0 |  | PT-19 ; 1st Fix, Inst of Trunking for ELV system (Elec RM) | 48d | 2011-11-28 | 2012-01-25 | T19CO07807C0, T19ER23010C0, T19ER26010C0 SS+14d |  |  |  |  | 67.6d | 0d | ELECTRICAL [1512 h]; Cost |  |  | T19ER27010C0 | PT | C | 19 | ER | ME | 270 | 10 | BILL 10 | B10 | S2 | 1F | R00 | ACF04 | 270 | 1S | MEP | M1F |  |  |  |  |  |
| T19ER26012C0 |  | PT-19 ; 1st Fix, Inst of Cable Tray (Elec RM) | 24d | 2011-12-11 | 2012-01-09 | T19CO07807C0, T19ER23010C0, T19ER27010C0 SS+10d |  |  |  |  | 69.6d | 0d | ELECTRICAL [399.6 h]; Cost |  |  | T19ER26012C0 | PT | C | 19 | ER | ME | 260 | 12 | BILL 10 | B10 | S2 | 1F | R00 | ACF04 | 260 | 1S | MEP | M1F |  |  |  |  |  |
| T19ER09205C0 |  | PT-19 ; Partitions Closing - Block (Elec RM) | 24d | 2011-12-21 | 2012-01-18 | T19ER09203C0 FF, T19ER09203C0 SS, T19ER08101C0 FF |  |  |  |  | 26d | 0d | PARTITIONS [24 m]; PARTITIONS [181 h]; Cost |  |  | T19ER09205C0 | PT | C | 19 | ER | PT | 092 | 05 | BILL 10 | B10 | S2 | FF | R00 | ACF06 | 092 |  | GP | P2F |  | 1540 |  |  |  |
| T19ER08101C0 |  | PT-19 ; Metal Door Frames (Elec RM) | 18d | 2011-12-28 | 2012-01-18 | T19ER09201C0, GNHE08101C0 FS+126d |  |  |  |  | 26d | 0d | METAL DOORS [6 h]; Cost |  |  | T19ER08101C0 | PT | C | 19 | ER | DO | 081 | 01 | BILL 10 | B10 | S2 | DF | R00 | ACF06 | 081 |  |  |  | 316 | 1374 | 08 |  |  |
| T19ER26022C0 |  | PT-19 ; 2nd Fix, Cable Pulling (Elec RM) | 24d | 2012-01-09 | 2012-02-07 | T19ER26012C0 |  |  |  |  | 69.6d | 29.6d | ELECTRICAL [2683.2 h]; Cost |  |  | T19ER26022C0 | PT | C | 19 | ER | ME | 260 | 22 | BILL 10 | B10 | S2 | 2F | R00 | ACF07 | 260 | 2n | MEP |  |  |  |  |  |  |
| T19ER09901C0 |  | PT-19 ; Wall Prime & 1st coat (Elec RM) | 12d | 2012-01-19 | 2012-02-01 | T19CO04003C0, T19ER09205C0 |  |  |  |  | 26d | 0d | WALL PAINT [33 h]; WALL PAINT [39 m2]; Cost |  |  | T19ER09901C0 | PT | C | 19 | ER | PA | 099 | 01 | BILL 10 | B10 | S2 | 01 | R00 | ACF06 | 099 |  |  |  | 328 | 1378 |  |  |  |
| T19ER09905C0 |  | PT-19 ; Ceiling Prime & 1st coat (Elec RM) | 8d | 2012-01-19 | 2012-01-28 | T19ER09205C0 |  |  |  |  | 29d | 0d | CEILING PAINT [2 h]; CEILING PAINT [2 m2]; Cost |  |  | T19ER09905C0 | PT | C | 19 | ER | PA | 099 | 05 | BILL 10 | B10 | S2 | 01 | R00 | ACF06 | 099 |  |  |  |  | 1544 |  |  |  |
| T19ER27020C0 |  | PT-19 ; 2nd Fix, Inst of ELV Equipment (Panels) (Elec RM) | 66d | 2012-01-19 | 2012-04-05 | T19ER09205C0 |  |  |  |  | 55d | 29.4d | ELECTRICAL [1819.2 h]; Cost |  |  | T19ER27020C0 | PT | C | 19 | ER | ME | 270 | 20 | BILL 10 | B10 | S2 | 2F | R00 | ACF04 | 270 | 2n | MEP |  |  |  |  | E |  |
| T19ER27022C0 |  | PT-19 ; 2nd Fix, Wiring Droppers (Elec RM) | 42d | 2012-01-19 | 2012-03-08 | T19ER09205C0 |  |  |  |  | 31d | 5.4d | ELECTRICAL [392.4 h]; Cost |  |  | T19ER27022C0 | PT | C | 19 | ER | ME | 270 | 22 | BILL 10 | B10 | S2 | 2F | R00 | ACF07 | 270 | 2n | MEP |  |  |  |  |  |  |
| T19ER26020C0 |  | PT-19 ; 2nd Fix, Wiring for Power/Lighting/Emergency (Elec RM) | 42d | 2012-01-23 | 2012-03-12 | T19ER26010C0 |  |  |  |  | 40d | 0d | ELECTRICAL [392.4 h]; Cost |  |  | T19ER26020C0 | PT | C | 19 | ER | ME | 260 | 20 | BILL 10 | B10 | S2 | 2F | R00 | ACF07 | 260 | 2n | MEP |  |  |  |  |  |  |
| T19ER23016C0 |  | PT-19 ; 1st Fix, Inst of VCD's/FD's (Elec RM) | 24d | 2012-01-25 | 2012-02-23 | T19ER23014C0 |  |  |  |  | 31.6d | 0d | MECHANICAL [1753.2 h]; Cost |  |  | T19ER23016C0 | PT | C | 19 | ER | ME | 230 | 16 | BILL 10 | B10 | S2 | 1F | R00 | ACF04 | 230 | 1S | MEP | M1F |  |  |  |  |  |
| T19ER23020C0 |  | PT-19 ; 2nd Fix, Inst of VAV'S CHW connection (Elec RM) | 42d | 2012-01-25 | 2012-03-15 | T19ER23010C0, T19ER23012C0 |  |  |  |  | 25.6d | 0d | MECHANICAL [1450.8 h]; Cost |  |  | T19ER23020C0 | PT | C | 19 | ER | ME | 230 | 20 | BILL 10 | B10 | S2 | 2F | R00 | ACF07 | 230 | 2n | MEP |  |  |  |  |  |  |
| T19ER23026C0 |  | PT-19 ; 2nd Fix, Insulation of CHW pipe & Duct (Elec RM) | 48d | 2012-01-25 | 2012-03-22 | T19ER23010C0, T19ER23012C0, T19ER23014C0 |  |  |  |  | 31.6d | 0d | MECHANICAL [3064.8 h]; Cost |  |  | T19ER23026C0 | PT | C | 19 | ER | ME | 230 | 26 | BILL 10 | B10 | S2 | 2F | R00 | ACF07 | 230 | 2n | MEP |  |  |  |  |  |  |
| T19ER27012C0 |  | PT-19 ; 1st Fix, Wiring/ Cabling work (Elec RM) | 48d | 2012-01-25 | 2012-03-22 | T19ER27010C0 |  |  |  |  | 67.6d | 42d | ELECTRICAL [392.4 h]; Cost |  |  | T19ER27012C0 | PT | C | 19 | ER | ME | 270 | 12 | BILL 10 | B10 | S2 | 1F | R00 | ACF04 | 270 | 1S | MEP | M1F |  |  |  |  |  |
| T19ER09907C0 |  | PT-19 ; Ceiling - Final Paint (Elec RM) | 8d | 2012-01-29 | 2012-02-07 | T19ER09905C0 |  |  |  |  | 57d | 31.4d | CEILING PAINT [2 h]; CEILING PAINT [1 m2]; Cost |  |  | T19ER09907C0 | PT | C | 19 | ER | PA | 099 | 07 | BILL 10 | B10 | S2 | 02 | R00 | ACF06 | 099 |  |  |  |  | 1546 |  |  |  |
| T19ER26032C0 |  | PT-19 ; Final Fix, Inst of Ceiling rose (Elec RM) | 36d | 2012-01-29 | 2012-03-11 | T19ER09905C0 |  |  |  |  | 29d | 3.4d | ELECTRICAL [61.2 h]; Cost |  |  | T19ER26032C0 | PT | C | 19 | ER | ME | 260 | 32 | BILL 10 | B10 | S2 | FF | R00 | ACF07 | 260 | FF | MEP |  |  |  |  |  |  |
| T19ER08106C0 |  | PT-19 ; Access Floor (Elec RM) | 21d | 2012-02-02 | 2012-02-27 | T19ER09901C0 |  |  |  |  | 26d | 0d | ASSORTED DOORS [184 h]; Cost |  |  | CP2ER08105C0 | PT | C | 19 | ER | FF | 096 | 06 | BILL 10 | B10 | S2 | DR | R00 | ACF06 | 081 |  |  |  | 317 | 1375 | 08 |  | RENAME |
| T19ER09601C0 |  | PT-19 ; Floor Finishes (Elec RM) | 18d | 2012-02-02 | 2012-02-23 | T19ER09901C0, T19ER09905C0 |  |  |  |  | 63d | 0d | ASSORTED FLOOR FINISH [1680 h]; ASSORTED FLOOR FINISH [932 m2]; Cost |  |  | T19ER09601C0 | PT | C | 19 | ER | FF | 096 | 01 | BILL 10 | B10 | S2 | 01 | R00 | ACF06 | FF |  |  |  | 326 | 1377 |  |  |  |
| T19ER09903C0 |  | PT-19 ; Wall - Final Paint (Elec RM) | 12d | 2012-02-02 | 2012-02-16 | T19ER09901C0 |  |  |  |  | 49d | 0d | WALL PAINT [18 h]; WALL PAINT [21 m2]; Cost |  |  | T19ER09903C0 | PT | C | 19 | ER | PA | 099 | 03 | BILL 10 | B10 | S2 | 02 | R00 | ACF06 | 099 |  |  |  | 329 | 1379 |  |  |  |
| T19ER21109C0 |  | PT-19 ; Final Fix, Gaseous Fire Suppression (Elec RM) | 36d | 2012-02-02 | 2012-03-15 | T19ER09901C0, T19ER09905C0 |  |  |  |  | 37d | 0d | MECHANICAL [2626.8 h]; Cost |  |  | T19ER21109C0 | PT | C | 19 | ER | ME | 211 | 09 | BILL 10 | B10 | S2 | FF | R00 | ACF07 | 211 | FF | MEP |  |  |  |  |  |  |
| T19ER26034C0 |  | PT-19 ; Final Fix, Inst of Switch/Sockets (Elec RM) | 18d | 2012-02-18 | 2012-03-08 | T19ER09903C0 |  |  |  |  | 79d | 55d | ELECTRICAL [362.4 h]; Cost |  |  | T19ER26034C0 | PT | C | 19 | ER | ME | 260 | 34 | BILL 10 | B10 | S2 | FF | R00 | ACF07 | 260 | FF | MEP |  |  |  |  |  |  |
| T19ER27030C0 |  | PT-19 ; Final Fix, Inst of ELV device (Detector/Speaker) (Elec RM) | 42d | 2012-02-18 | 2012-04-05 | T19ER09903C0 |  |  |  |  | 55d | 0d | ELECTRICAL [3571.2 h]; Cost |  |  | T19ER27030C0 | PT | C | 19 | ER | ME | 270 | 30 | BILL 10 | B10 | S2 | FF | R00 | ACF07 | 270 | FF | MEP |  |  |  |  |  |  |
| T19ER23024C0 |  | PT-19 ; 2nd Fix, Inst of VCD's/FD's (Elec RM) | 24d | 2012-02-23 | 2012-03-22 | T19ER23014C0, T19ER23016C0 |  |  |  |  | 31.6d | 0d | MECHANICAL [1753.2 h]; Cost |  |  | T19ER23024C0 | PT | C | 19 | ER | ME | 230 | 24 | BILL 10 | B10 | S2 | 2F | R00 | ACF07 | 230 | 2n | MEP |  |  |  |  |  |  |
| T19ER08105C0 |  | PT-19 ; Metal Doors (Elec RM) | 12d | 2012-02-25 | 2012-03-08 | T19ER09601C0, T19ER09901C0 |  |  |  |  | 63d | 0d | METAL DOORS [30 h]; METAL DOORS [3 no]; Cost |  |  | T19ER08105C0 | PT | C | 19 | ER | DO | 081 | 05 | BILL 10 | B10 | S2 | DR | R00 | ACF06 | 081 |  |  |  | 317 | 1375 | 08 |  |  |
| T19ER22037C0 |  | PT-19 ; Final Fix, Inst of All drain (Elec RM) | 18d | 2012-02-25 | 2012-03-15 | T19ER09601C0, T19ER09903C0 |  |  |  |  | 73d | 47.4d | PLUMBING [1378.8 h]; Cost |  |  | T19ER22037C0 | PT | C | 19 | ER | ME | 220 | 37 | BILL 10 | B10 | S2 | FF | R00 | ACF07 | 220 | FF | MEP |  |  |  |  |  |  |
| T19ER26024C0 |  | PT-19 ; 2nd Fix, Inst of Equipment (DB, TR, SG) (Elec RM) | 62d | 2012-02-28 | 2012-05-09 | T19ER08106C0, T19ER09205C0 |  |  |  |  | 26d | 2d | ELECTRICAL [2133.6 h]; Cost |  |  | T19ER26024C0 | PT | C | 19 | ER | ME | 260 | 24 | BILL 10 | B10 | S2 | 2F | R00 | ACF04 | 260 | 2n | MEP |  |  |  |  | E |  |
| T19ER08709C0 |  | PT-19 ; Ironmongery (Elec RM) | 16d | 2012-03-10 | 2012-03-27 | T19ER08105C0 |  |  |  |  | 63d | 37.4d | IRONMONGERY [50 h]; IRONMONGERY [5 no]; Cost |  |  | T19ER08709C0 | PT | C | 19 | ER | DO | 087 | 09 | BILL 10 | B10 | S2 | IM | R00 | ACF06 | 087 |  |  |  | 322 | 6230 | 08 |  |  |
| T19ER26030C0 |  | PT-19 ; Final Fix, Termination & Gladding of Cables (Elec RM) | 36d | 2012-03-13 | 2012-04-23 | T19ER26020C0, T19ER26022C0 |  |  |  |  | 40d | 16d | ELECTRICAL [148.8 h]; Cost |  |  | T19ER26030C0 | PT | C | 19 | ER | ME | 260 | 30 | BILL 10 | B10 | S2 | FF | R00 | ACF07 | 260 | FF | MEP |  |  |  |  |  |  |
| T19ER21124C0 |  | PT-19 ; 2nd Fix, Inst of Zone Control Valve (Elec RM) | 42d | 2012-03-15 | 2012-05-03 | T19ER23020C0, T19ER09907C0 FF |  |  |  |  | 31.6d | 6d | MECHANICAL [832.8 h]; Cost |  |  | T19ER21124C0 | PT | C | 19 | ER | ME | 211 | 24 | BILL 10 | B10 | S2 | 2F | R00 | ACF07 | 211 | 2n | MEP |  |  |  |  |  |  |
| T19ER26039C0 |  | PT-19 ; Final Fix, Inst of Light fittings (Elec RM) | 48d | 2012-03-15 | 2012-05-10 | T19ER09903C0, T19ER26032C0, T19ER21120C0 FF, T19ER27012C0 FF, T19ER27022C0, T19ER23020C0, T19ER08709C0 FF, T19ER09907C0, T19ER22037C0 FF, T19ER27030C0 FF, T19ER27020C0 FF, T19ER21124C0 FF |  |  |  |  | 25.6d | 1.6d | ELECTRICAL [7815.6 h]; Cost |  |  | T19ER26039C0 | PT | C | 19 | ER | ME | 260 | 39 | BILL 10 | B10 | S2 | FF | R00 | ACF07 | 260 | FF | MEP |  |  |  |  |  |  |
| T19ER21120C0 |  | PT-19 ; 2nd Fix, Inst of Sprinkler droppers (Elec RM) | 36d | 2012-03-17 | 2012-04-26 | T19ER21109C0 |  |  |  |  | 37d | 11.4d | MECHANICAL [1602 h]; Cost |  |  | T19ER21120C0 | PT | C | 19 | ER | ME | 211 | 20 | BILL 10 | B10 | S2 | 2F | R00 | ACF07 | 211 | 2n | MEP |  |  |  |  |  |  |
| T19ER23030C0 |  | PT-19 ; Final Fix, Inst of Grilles & Diffusers (Elec RM) | 36d | 2012-03-22 | 2012-05-03 | T19ER09901C0, T19ER23026C0 |  |  |  |  | 31.6d | 7.6d | MECHANICAL [1498.8 h]; Cost |  |  | T19ER23030C0 | PT | C | 19 | ER | ME | 230 | 30 | BILL 10 | B10 | S2 | FF | R00 | ACF07 | 230 | FF | MEP |  |  |  |  |  |  |
| T19ER23032C0 |  | PT-19 ; Final Fix, Inst of Flexible Duct & Plenum boxes (Elec RM) | 36d | 2012-03-22 | 2012-05-03 | T19ER23024C0 |  |  |  |  | 31.6d | 7.6d | MECHANICAL [30 h]; Cost |  |  | T19ER23032C0 | PT | C | 19 | ER | ME | 230 | 32 | BILL 10 | B10 | S2 | FF | R00 | ACF07 | 230 | FF | MEP |  |  |  |  |  |  |
| T19ER27032C0 |  | PT-19 ; Final Fix, BMS connection work to Equipment (Elec RM) | 48d | 2012-04-07 | 2012-05-31 | T19ER26024C0 SS, T19ER27030C0 |  |  |  |  | 204.12d | 56.75d | ELECTRICAL [29564.4 h]; Cost |  |  | T19ER27032C0 | PT | C | 19 | ER | ME | 270 | 32 | BILL 10 | B10 | S2 | FF | R00 | ACF07 | 270 | FF | MEP |  |  |  |  |  |  |

| ID | WBS | Activity | Duration | Start | Finish | Predecessors | Complete | Remaining | Planned start | Planned finish | Total float | Free float | Resources | Cost | Actual cost | change id | CCAD BUILDING(SET) | CCAD PHASE(SET) | CCAD FLOOR(SET) | CCAD ZONE(SET) | CCAD WORK(SET) | CCAD SECTION(SET) | CCAD SERIAL No.(SET) | CCAD CBS(SET) | CCAD BILL(SET) | CCAD HANDOVER(SET) | CCAD TAG(SET) | CCAD REV(SET) | CCADACF (SET) | CCAD SSCF | CCAD SUB ZONE MEP(SET) | CCAD CSA | Act Selector % | Change Order # | NEW ACTIVITY ID | CCAD DIVISION(SET) | CCAD MEQ |
| --- | --- | --- | --- | --- | --- | --- | --- | --- | --- | --- | --- | --- | --- | --- | --- | --- | --- | --- | --- | --- | --- | --- | --- | --- | --- | --- | --- | --- | --- | --- | --- | --- | --- | --- | --- | --- | --- |
|  | 10 | **Precommissioning Tesing & snagging (Trans RM / CV RM)** |  | 2012-08-07 | 2012-10-13 |  |  |  |  |  |  |  |  |  |  |  |  |  |  |  |  |  |  |  |  |  |  |  |  |  |  |  |  |  |  |  |  |
| T19TS01806C0 |  | PT-19 ; MEP de-snag, FIREM sign-off | 10d | 2012-08-07 | 2012-08-21 | T19ER21109C0, T19ER26034C0, T19ER22037C0, T19ER27032C0, T19CO04406C0, T19ER23030C0, T19ER23032C0, T19ER26030C0, T19ER26032C0, T19ER26039C0, T19ER27030C0, T19ER21124C0 |  |  |  |  | 147.38d | 20d | TESTING & COMMISSIONING [510 h]; Cost |  |  | T19TS01801C0 | PT | C | 19 | TS | SC | 018 | 01 | BILL 10 | B10 | S2 | 01 | R00 | ACF07 | 018 |  |  |  |  |  |  |  |
| T19TS01811C0 |  | PT-19 ; Touch-up & Clean / JV inspection /CIR /De-snag | 18d | 2012-09-13 | 2012-10-04 | T19ER08106C0, T19ER08709C0, T19ER09601C0, T19ER09903C0, T19ER09907C0, T19TS01806C0, T19CO04412C0, T19CO04413C0 |  |  |  |  | 127.38d | 0d | TESTING & COMMISSIONING [128 h]; Cost |  |  | T19TS01802C0 | PT | C | 19 | TS | SC | 018 | 02 | BILL 10 | B10 | S2 | 02 | R00 | ACF07 | 018 |  |  |  |  |  |  |  |
| T19TS01816C0 |  | PT-19 ; Consultant's final de-snag inspection | 7d | 2012-10-04 | 2012-10-13 | T19TS01811C0 |  |  |  |  | 127.38d | 36.5d | Labor General [1 h]; Cost |  |  | T19TS01803C0 | PT | C | 19 | TS | SC | 018 | 03 | BILL 10 | B10 | S2 | 03 | R00 | ACF07 | 018 |  |  |  |  |  |  |  |
|  | 06 | **Public Area ( Elev.Lobby & Corridors )** |  | 2011-09-05 | 2013-03-16 |  |  |  |  |  |  |  |  |  |  |  |  |  |  |  |  |  |  |  |  |  |  |  |  |  |  |  |  |  |  |  |  |
| T19PA26001C0 |  | PT-19 ; 1st Fix, Inst of Trunking/Conduiting (Public Area) | 60d | 2011-09-05 A | 2012-02-09 | T19CO07807C0, T19PA23001C0 | 5% | 57d | 2011-11-22 | 2012-02-02 | 29.5d | 0d | ELECTRICAL [4268.4 h]; Cost [37790.1 AED] | 37,790.1 | 1,889.5 | S08PA26001C0 | PT | C | 19 | PA | ME | 260 | 01 | BILL 10 | B10 | S2 | 1F | R00 | ACF04 | 260 | 1S | MEP | M1F |  |  |  |  |
| T19PA23001C0 |  | PT-19 ; 1st Fix, Inst. of Supports for MEP (Public Area) | 36d | 2011-10-17 | 2011-12-01 | T19CO07807C0 |  |  |  |  | 29.5d | 0d | MECHANICAL [800.4 h]; Cost |  |  | S08PA23001C0 | PT | C | 19 | PA | ME | 230 | 01 | BILL 10 | B10 | S2 | 1F | R00 | ACF04 | 230 | 1S | MEP | M1F |  |  |  |  |
| T19PA09201C0 |  | PT-19 ; Metal Studs (Public Area) | 30d | 2011-10-31 | 2011-12-10 | T19PA23001C0 SS+12d, T19PA23001C0 FF |  |  |  |  | 105d | 0d | PARTITIONS [2136 h]; PARTITIONS - Metal Studs [296 m]; Cost |  |  | S08PA09201C0 | PT | C | 19 | PA | PT | 092 | 01 | BILL 10 | B10 | S2 | 1F | R00 | ACF06 | 092 |  | GP | PMS | 313 | 944 |  |  |
| T19PA27010C0 |  | PT-19 ; 1st Fix, Inst of Trunking for ELV system (Public Area) | 54d | 2011-12-04 | 2012-02-06 | T19CO07807C0, T19PA23001C0, T19PA26001C0 SS+14d |  |  |  |  | 29.5d | 0d | ELECTRICAL [3202.8 h]; Cost |  |  | S08PA27010C0 | PT | C | 19 | PA | ME | 270 | 10 | BILL 10 | B10 | S2 | 1F | R00 | ACF04 | 270 | 1S | MEP | M1F |  |  |  |  |
| T19PA09203C0 |  | PT-19 ; Partitions early wall & 1st face (Public Area) | 32.88d | 2011-12-11 | 2012-01-18 | T19PA09201C0 |  |  |  |  | 123.62d | 55.12d | PARTITIONS [296 m]; PARTITIONS [1676 h]; Cost |  |  | S08PA09203C0 | PT | C | 19 | PA | PT | 092 | 03 | BILL 10 | B10 | S2 | 2F | R00 | ACF06 | 092 |  | GP | P1F | 314 | 945 |  |  |
| T19PA22011C0 |  | PT-19 ; 2nd Fix, Drainage/Water pipe (wall) (Public Area) | 42d | 2011-12-11 | 2012-01-29 | T19PA09201C0 |  |  |  |  | 108.5d | 0d | PLUMBING [1378.8 h]; Cost |  |  | S08PA22011C0 | PT | C | 19 | PA | ME | 220 | 11 | BILL 10 | B10 | S2 | 2F | R00 | ACF07 | 220 | 2n | MEP |  |  |  |  |  |
| T19PA26009C0 |  | PT-19 ; 2nd Fix, Inst of Wall conduites (Public Area) | 42d | 2011-12-11 | 2012-01-29 | T19PA09201C0 |  |  |  |  | 108.5d | 0d | ELECTRICAL [734.4 h]; Cost |  |  | S08PA26009C0 | PT | C | 19 | PA | ME | 260 | 09 | BILL 10 | B10 | S2 | 2F | R00 | ACF07 | 260 | 2n | MEP |  |  |  |  |  |
| T19PA26013C0 |  | PT-19 ; 1st Fix, Inst of Cable Tray (Public Area) | 48d | 2011-12-15 | 2012-02-11 | T19CO07807C0, T19PA23001C0, T19PA27010C0 SS+10d |  |  |  |  | 29.5d | 0d | ELECTRICAL [399.6 h]; Cost |  |  | S08PA26013C0 | PT | C | 19 | PA | ME | 260 | 13 | BILL 10 | B10 | S2 | 1F | R00 | ACF04 | 260 | 1S | MEP | M1F |  |  |  |  |
| T19PA22019C0 |  | PT-19 ; 1st Fix, Inst of Drainage pipe (ceiling) (Public Area) | 48d | 2012-01-02 | 2012-02-27 | T19PA23001C0, T19PA26013C0 SS+14d |  |  |  |  | 29.5d | 0d | PLUMBING [1378.8 h]; Cost |  |  | S08PA22019C0 | PT | C | 19 | PA | ME | 220 | 19 | BILL 10 | B10 | S2 | 1F | R00 | ACF04 | 220 | 1S | MEP | M1F |  |  |  |  |
| T19PA22005C0 |  | PT-19 ; 1st Fix, Inst of Water supply pipe (ceiling) (Public Area) | 60d | 2012-01-14 | 2012-03-24 | T19PA22019C0 SS+10d, T19PA23001C0 |  |  |  |  | 29.5d | 0d | PLUMBING [4548 h]; Cost |  |  | S08PA22005C0 | PT | C | 19 | PA | ME | 220 | 05 | BILL 10 | B10 | S2 | 1F | R00 | ACF04 | 220 | 1S | MEP | M1F |  |  |  |  |
| T19PA21111C0 |  | PT-19 ; 1st Fix, Inst of Sprinkler main pipe (Public Area) | 48d | 2012-01-28 | 2012-03-24 | T19PA22005C0 SS+12d, T19PA23001C0 |  |  |  |  | 29.5d | 0d | MECHANICAL [1236 h]; Cost |  |  | S08PA21111C0 | PT | C | 19 | PA | ME | 211 | 11 | BILL 10 | B10 | S2 | 1F | R00 | ACF04 | 211 | 1S | MEP | M1F |  |  |  |  |
| T19PA01005C0 |  | PT-19 ; 2nd, Wall Inspection by Consultant (Public Area) | 6d | 2012-01-30 | 2012-02-06 | T19PA22011C0, T19PA26009C0 |  |  |  |  | 108.5d | 40d | Labor General [1.2 h]; Cost |  |  | S08PA01005C0 | PT | C | 19 | PA | ME | 010 | 05 | BILL 10 | B10 | S2 | WI | R00 | ACF07 | 010 | 2n | MEP |  |  |  |  |  |
| T19PA27001C0 |  | PT-19 ; 1st Fix, Wiring/ Cabling work (Public Area) | 48d | 2012-02-12 | 2012-04-07 | T19PA26001C0, T19PA26013C0, T19PA27010C0 |  |  |  |  | 127.5d | 98d | ELECTRICAL [392.4 h]; Cost |  |  | S08PA27001C0 | PT | C | 19 | PA | ME | 270 | 01 | BILL 10 | B10 | S2 | 1F | R00 | ACF04 | 270 | 1S | MEP | M1F |  |  |  |  |
| T19PA23017C0 |  | PT-19 ; 1st Fix, Inst of CHW pipe (Public Area) | 54d | 2012-02-14 | 2012-04-16 | T19PA21111C0 SS+14d, T19PA23001C0 |  |  |  |  | 29.5d | 0d | MECHANICAL [2467.2 h]; Cost |  |  | S08PA23017C0 | PT | C | 19 | PA | ME | 230 | 17 | BILL 10 | B10 | S2 | 1F | R00 | ACF04 | 230 | 1S | MEP | M1F |  |  |  |  |
| T19PA08103C0 |  | PT-19 ; Door Frames (Public Area) | 18d | 2012-02-20 | 2012-03-12 | T19PA09201C0, GNHE08101C0 FS+126d, T18PA08103C0 SS+3d |  |  |  |  | 45.4d | 0d | ASSORTED DOORS [165 h]; Cost |  |  | S08PA08103C0 | PT | C | 19 | PA | DO | 081 | 03 | BILL 10 | B10 | S2 | DF | R00 | ACF06 | 081 |  |  |  | 316 | 947 | 08 |  |
| T19PA23023C0 |  | PT-19 ; 1st Fix, Inst of Main Ducting (Public Area) | 60d | 2012-02-26 | 2012-05-05 | T19PA23001C0, T19PA23017C0 SS+10d |  |  |  |  | 55.5d | 0d | MECHANICAL [8022 h]; Cost |  |  | S08PA23023C0 | PT | C | 19 | PA | ME | 230 | 23 | BILL 10 | B10 | S2 | 1F | R00 | ACF04 | 230 | 1S | MEP | M1F |  |  |  |  |
| T19PA09205C0 |  | PT-19 ; Partitions Closing (Public Area) | 36d | 2012-03-25 | 2012-05-05 | T19PA01005C0, T19PA09203C0, T19PA22005C0, T19PA22019C0, TAFOA09214C1 FF, T19PA08103C0 FF |  |  |  |  | 68.5d | 0d | PARTITIONS [296 m]; PARTITIONS [2152 h]; Cost |  |  | S08PA09205C0 | PT | C | 19 | PA | PT | 092 | 05 | BILL 10 | B10 | S2 | FF | R00 | ACF06 | 092 |  | GP | P2F | 315 | 946 |  |  |
| T19PA21117C0 |  | PT-19 ; 1st Fix, Inst of Sprinkler branch pipe (Public Area) | 48d | 2012-03-25 | 2012-05-19 | T19PA09201C0, T19PA21111C0 |  |  |  |  | 91.5d | 62d | MECHANICAL [561.6 h]; Cost |  |  | S08PA21117C0 | PT | C | 19 | PA | ME | 211 | 17 | BILL 10 | B10 | S2 | 1F | R00 | ACF04 | 211 | 1S | MEP | M1F |  |  |  |  |
| T19PA23009C0 |  | PT-19 ; 2nd Fix, Inst of VAV'S CHW connection (Public Area) | 42d | 2012-04-17 | 2012-06-04 | T19PA23017C0 |  |  |  |  | 29.5d | 0d | MECHANICAL [1450.8 h]; Cost |  |  | S08PA23009C0 | PT | C | 19 | PA | ME | 230 | 09 | BILL 10 | B10 | S2 | 2F | R00 | ACF07 | 230 | 2n | MEP |  |  |  |  |  |
| T19PA09901C0 |  | PT-19 ; Wall Prime & 1st coat (Public Area) | 30d | 2012-05-06 | 2012-06-09 | T19CO04003C0, T19PA09205C0 |  |  |  |  | 73.5d | 0d | WALL PAINT [318 h]; WALL PAINT [396 m2]; Cost |  |  | S08PA09901C0 | PT | C | 19 | PA | PA | 099 | 01 | BILL 10 | B10 | S2 | 01 | R00 | ACF06 | 099 |  |  |  | 328 | 956 |  |  |
| T19PA23008C0 |  | PT-19 ; 1st Fix, Inst of VCD's/FD's (Public Area) | 48d | 2012-05-06 | 2012-07-01 | T19PA23023C0 |  |  |  |  | 55.5d | 26d | MECHANICAL [1753.2 h]; Cost |  |  | S08PA23008C0 | PT | C | 19 | PA | ME | 230 | 08 | BILL 10 | B10 | S2 | 1F | R00 | ACF04 | 230 | 1S | MEP | M1F |  |  |  |  |
| T19PA26005C0 |  | PT-19 ; 2nd Fix, Wiring for Power/Lighting/Emergency (Public Area) | 42d | 2012-05-06 | 2012-06-24 | T19PA09205C0 |  |  |  |  | 125.5d | 0d | ELECTRICAL [392.4 h]; Cost |  |  | S08PA26005C0 | PT | C | 19 | PA | ME | 260 | 05 | BILL 10 | B10 | S2 | 2F | R00 | ACF07 | 260 | 2n | MEP |  |  |  |  |  |
| T19PA26007C0 |  | PT-19 ; 2nd Fix, Cable Pulling (Public Area) | 48d | 2012-05-06 | 2012-07-01 | T19PA09205C0 |  |  |  |  | 161.5d | 132d | ELECTRICAL [2683.2 h]; Cost |  |  | S08PA26007C0 | PT | C | 19 | PA | ME | 260 | 07 | BILL 10 | B10 | S2 | 2F | R00 | ACF07 | 260 | 2n | MEP |  |  |  |  |  |
| T19PA26011C0 |  | PT-19 ; 2nd Fix, Inst of Equipment (DB) (Public Area) | 54d | 2012-05-06 | 2012-07-08 | T19PA09205C0 |  |  |  |  | 151d | 78d | ELECTRICAL [878.4 h]; Cost |  |  | S08PA26011C0 | PT | C | 19 | PA | ME | 260 | 11 | BILL 10 | B10 | S2 | 2F | R00 | ACF04 | 260 | 2n | MEP |  |  |  |  | E |
| T19PA26053C0 |  | PT-19 ; 2nd Fix, Wiring / Cabling (Public Area) | 42d | 2012-05-06 | 2012-06-24 | T19PA09203C0, T19PA09205C0 |  |  |  |  | 83.5d | 54d | ELECTRICAL [392.4 h]; Cost |  |  | S08PA26053C0 | PT | C | 19 | PA | ME | 260 | 53 | BILL 10 | B10 | S2 | 2F | R00 | ACF07 | 260 | 2n | MEP |  | 389 | 977 |  |  |
| T19PA23015C0 |  | PT-19 ; 2nd Fix, Insulation of CHW pipe & Duct (Public Area) | 48d | 2012-06-05 | 2012-07-31 | T19PA23009C0, T19PA23017C0, T19PA23023C0 |  |  |  |  | 29.5d | 0d | MECHANICAL [3064.8 h]; Cost |  |  | S08PA23015C0 | PT | C | 19 | PA | ME | 230 | 15 | BILL 10 | B10 | S2 | 2F | R00 | ACF07 | 230 | 2n | MEP |  |  |  |  |  |
| T19PA05501C0 |  | PT-19 ; Handrails & balustrade (Public Area) | 36d | 2012-06-10 | 2012-07-22 | T19PA09901C0, TAFT105509C0, TAFT805509C0 |  |  |  |  | 139d | 66d | SECONDARY STEEL [310 h]; Cost |  |  | S08PA05501C0 | PT | C | 19 | PA | SW | 055 | 01 | BILL 10 | B10 | S2 | 01 | R00 | ACF03 | a |  |  |  |  |  |  |  |
| T19PA26015C0 |  | PT-19 ; Final Fix, Termination & Gladding of Cables (Public Area) | 36d | 2012-06-25 | 2012-08-05 | T19PA26005C0 |  |  |  |  | 125.5d | 96d | ELECTRICAL [148.8 h]; Cost |  |  | S08PA26015C0 | PT | C | 19 | PA | ME | 260 | 15 | BILL 10 | B10 | S2 | FF | R00 | ACF07 | 260 | FF | MEP |  |  |  |  |  |
| T19PA09501C0 |  | PT-19 ; Ceiling Grid and Service Tile (Public Area) | 22d | 2012-08-01 | 2012-08-28 | T19PA09205C0 SS+15d, T19PA21117C0, T19PA23008C0, T19PA23009C0, T19PA23015C0, T19PA27001C0, T19PA26053C0 FF, T19PA09901C0 |  |  |  |  | 29.5d | 0d | CEILING GRID FOR GYPSUM [6589.11 h]; CEILING GRID FOR GYPSUM [563.79 m2]; Cost |  |  | S08PA09501C0 | PT | C | 19 | PA | CE | 095 | 01 | BILL 10 | B10 | S2 | 01 | R00 | ACF06 | 095 |  |  |  | 323 | 952 |  |  |
| T19PA09601C0 |  | PT-19 ; Flooring (Rubber & etc) (Public Area) | 36d | 2012-08-29 | 2012-10-09 | T19PA09501C0, T19PA05501C0 FF |  |  |  |  | 73d | 0d | RUBBER FLOOR [8 h]; RUBBER FLOOR [15 m2]; Cost |  |  | S08PA09601C0 | PT | C | 19 | PA | FF | 096 | 01 | BILL 10 | B10 | S2 | 03 | R00 | ACF06 | RF |  |  |  | 326 | 955 |  |  |
| T19PA09905C0 |  | PT-19 ; Ceiling Prime & 1st coat (Public Area) | 30d | 2012-08-29 | 2012-10-02 | T19PA09501C0 |  |  |  |  | 109d | 0d | CEILING PAINT [49 h]; CEILING PAINT [59 m2]; Cost |  |  | S08PA09905C0 | PT | C | 19 | PA | PA | 099 | 05 | BILL 10 | B10 | S2 | 01 | R00 | ACF06 | 099 |  |  |  | 330 | 958 |  |  |
| T19PA21115C0 |  | PT-19 ; 2nd Fix, Inst of Sprinkler droppers (Public Area) | 42d | 2012-08-29 | 2012-10-16 | T19PA09501C0 |  |  |  |  | 29.5d | 0d | MECHANICAL [1602 h]; Cost |  |  | S08PA21115C0 | PT | C | 19 | PA | ME | 211 | 15 | BILL 10 | B10 | S2 | 2F | R00 | ACF07 | 211 | 2n | MEP |  |  |  |  |  |
| T19PA23021C0 |  | PT-19 ; 2nd Fix, Inst of Flexible Duct & Plenum boxes (Public Area) | 42d | 2012-08-29 | 2012-10-16 | T19PA09205C0, T19PA09501C0 |  |  |  |  | 29.5d | 0d | MECHANICAL [30 h]; Cost |  |  | S08PA23021C0 | PT | C | 19 | PA | ME | 230 | 21 | BILL 10 | B10 | S2 | 2F | R00 | ACF07 | 230 | 2n | MEP |  |  |  |  |  |
| T19PA26017C0 |  | PT-19 ; Final Fix, Inst of Ceiling rose (Public Area) | 36d | 2012-08-29 | 2012-10-09 | T19PA09501C0 |  |  |  |  | 53.5d | 0d | ELECTRICAL [61.2 h]; Cost |  |  | S08PA26017C0 | PT | C | 19 | PA | ME | 260 | 17 | BILL 10 | B10 | S2 | FF | R00 | ACF07 | 260 | FF | MEP |  |  |  |  |  |
| T19PA27002C0 |  | PT-19 ; 2nd Fix, Wiring Droppers (Public Area) | 42d | 2012-08-29 | 2012-10-16 | T19PA09501C0 |  |  |  |  | 59.5d | 0d | ELECTRICAL [392.4 h]; Cost |  |  | S08PA27002C0 | PT | C | 19 | PA | ME | 270 | 02 | BILL 10 | B10 | S2 | 2F | R00 | ACF07 | 270 | 2n | MEP |  |  |  |  |  |
| T19PA27020C0 |  | PT-19 ; 2nd Fix, Inst of ELV Equipment (Panels) (Public Area) | 66d | 2012-08-29 | 2012-11-17 | T19PA09205C0, T19PA09501C0 |  |  |  |  | 79d | 6d | ELECTRICAL [1819.2 h]; Cost |  |  | S08PA27020C0 | PT | C | 19 | PA | ME | 270 | 20 | BILL 10 | B10 | S2 | 2F | R00 | ACF04 | 270 | 2n | MEP |  |  |  |  | E |
| T19PA26003C0 |  | PT-19 ; Final Fix, Inst of Light fittings (Public Area) | 48d | 2012-09-05 | 2012-11-01 | T19PA09501C0, T19PA26017C0 SS+6d |  |  |  |  | 53.5d | 24d | ELECTRICAL [7815.6 h]; Cost |  |  | S08PA26003C0 | PT | C | 19 | PA | ME | 260 | 03 | BILL 10 | B10 | S2 | FF | R00 | ACF07 | 260 | FF | MEP |  |  |  |  |  |
| T19PA27030C0 |  | PT-19 ; Final Fix, Inst of ELV devise (Detector/Speaker) (Public Area) | 42d | 2012-09-05 | 2012-10-23 | T19PA09501C0, T19PA27002C0 SS+6d |  |  |  |  | 59.5d | 30d | ELECTRICAL [3571.2 h]; Cost |  |  | S08PA27030C0 | PT | C | 19 | PA | ME | 270 | 30 | BILL 10 | B10 | S2 | FF | R00 | ACF07 | 270 | FF | MEP |  |  |  |  |  |
| T19PA09903C0 |  | PT-19 ; Wall Final Paint (Public Area) | 30d | 2012-10-03 | 2012-11-08 | T19PA09901C0, T19PA09905C0, T19PA09501C0 |  |  |  |  | 109d | 42d | WALL PAINT [172 h]; WALL PAINT [213 m2]; Cost |  |  | S08PA09903C0 | PT | C | 19 | PA | PA | 099 | 03 | BILL 10 | B10 | S2 | 02 | R00 | ACF06 | 099 |  |  |  | 329 | 957 |  |  |
| T19PA08107C0 |  | PT-19 ; Doors (Public Area) | 30d | 2012-10-10 | 2012-11-17 | T19PA08103C0, T19PA09501C0, T19PA09601C0, T19PA09901C0 |  |  |  |  | 80.5d | 0d | ASSORTED DOORS [330 h]; ASSORTED DOORS [33 no]; Cost |  |  | S08PA08107C0 | PT | C | 19 | PA | DO | 081 | 07 | BILL 10 | B10 | S2 | DR | R00 | ACF06 | 081 |  |  |  | 317 | 948 | 08 |  |
| T19PA09701C0 |  | PT-19 ; Wall finishes (ST, WD, WC) (Public Area) | 36d | 2012-10-10 | 2012-11-24 | T19PA26011C0, T19PA27020C0 FF, T19PA09501C0, T19PA09601C0 |  |  |  |  | 73d | 0d | ASSORTED WALL FINISH [282 h]; ASSORTED WALL FINISH [323 m2]; Cost |  |  | S08PA09701C0 | PT | C | 19 | PA | WF | 097 | 01 | BILL 10 | B10 | S2 | 01 | R00 | ACF06 | 097 |  |  |  | 105 | 1002 |  |  |
| T19PA21113C0 |  | PT-19 ; Final Fix, Inst of Sprinklers head/ Extinguisher (Public Area) | 36d | 2012-10-17 | 2012-12-01 | T19PA09501C0, T19PA21115C0 |  |  |  |  | 29.5d | 0d | MECHANICAL [234 h]; Cost |  |  | S08PA21113C0 | PT | C | 19 | PA | ME | 211 | 13 | BILL 10 | B10 | S2 | FF | R00 | ACF07 | 211 | FF | MEP |  |  |  |  |  |
| T19PA23019C0 |  | PT-19 ; Final Fix, Inst of Grilles & Diffusers (Public Area) | 36d | 2012-10-17 | 2012-12-01 | T19PA09501C0, T19PA23021C0 |  |  |  |  | 29.5d | 0d | MECHANICAL [1498.8 h]; Cost |  |  | S08PA23019C0 | PT | C | 19 | PA | ME | 230 | 19 | BILL 10 | B10 | S2 | FF | R00 | ACF07 | 230 | FF | MEP |  |  |  |  |  |
| T19PA08709C0 |  | PT-19 ; Ironmongery (Public Area) | 22.5d | 2012-11-18 | 2012-12-15 | T19PA08107C0 |  |  |  |  | 80.5d | 51d | IRONMONGERY [470 h]; IRONMONGERY [47 no]; Cost |  |  | S08PA08709C0 | PT | C | 19 | PA | DO | 087 | 09 | BILL 10 | B10 | S2 | IM | R00 | ACF06 | 087 |  |  |  | 322 | 951 | 08 |  |
| T19PA11001C0 |  | PT-19 ; Wall Protection (WP, CG, WG, FCG) (Public Area) | 24d | 2012-11-25 | 2012-12-23 | T19PA09701C0, T19PA09903C0 SS |  |  |  |  | 73d | 43.5d | FF&E [14 h]; Cost |  |  | S08PA11001C0 | PT | C | 19 | PA | WF | 110 | 01 | BILL 10 | B10 | S2 | 03 | R00 | ACF08 | b |  |  |  | 326 | 1001 |  |  |
| T19PA11009C0 |  | PT-19 ; Signage (Public Area) | 14d | 2012-11-25 | 2012-12-11 | T19PA09701C0 |  |  |  |  | 83d | 53.5d | SIGNAGES [62 h]; SIGNAGES [62.42 no]; Cost |  |  | S08PA11009C0 | PT | C | 19 | PA | SA | 110 | 09 | BILL 10 | B10 | S2 | 09 | R00 | ACF08 | c |  |  |  | 322 | 951 | 08 |  |
| T19PA01006C0 |  | PT-19 ; 2nd, Ceiling Inspection by Consultants (Public Area) | 6d | 2012-12-02 | 2012-12-09 | T19PA21115C0, T19PA23009C0, T19PA23015C0, T19PA27002C0, T19PA09501C0, T19PA21113C0, T19PA23019C0, T19PA26015C0, T19PA26017C0, T19PA26003C0, T19PA27030C0 |  |  |  |  | 29.5d | 0d | Labor General [1.2 h]; Cost |  |  | S08PA01006C0 | PT | C | 19 | PA | ME | 010 | 06 | BILL 10 | B10 | S2 | CI | R00 | ACF07 | 010 | 2n | MEP |  |  |  |  |  |
| T19PA09503C0 |  | PT-19 ; Ceiling closure - ACT/Gypsum (Public Area) | 25.5d | 2012-12-10 | 2013-01-09 | T19PA01006C0, T19PA21115C0, T19PA26005C0, T19PA27001C0, T19PA27002C0, TAFOA09513C1 FF, T19PA23021C0, T19PA26007C0 |  |  |  |  | 29.5d | 0d | ASSORTED CEILING FINISH [743.53 h]; CEILING GYPSUM [184.91 h]; ASSORTED CEILING FINISH [1209 m2]; CEILING GYPSUM [564 m2]; Cost |  |  | S08PA09503C0 | PT | C | 19 | PA | CE | 095 | 03 | BILL 10 | B10 | S2 | 02 | R00 | ACF06 | 095 |  |  |  | 324 | 953 |  |  |
| T19PA09907C0 |  | PT-19 ; Ceiling Final paint (Public Area) | 18d | 2013-01-09 | 2013-01-31 | T19PA09601C0, T19PA09905C0, T19PA09503C0 |  |  |  |  | 41.5d | 12d | CEILING PAINT [26 h]; CEILING PAINT [32 m2]; Cost |  |  | S08PA09907C0 | PT | C | 19 | PA | PA | 099 | 07 | BILL 10 | B10 | S2 | 02 | R00 | ACF06 | 099 |  |  |  | 331 | 959 |  |  |
| T19PA26019C0 |  | PT-19 ; Final Fix, Inst of Switch/Sockets (Public Area) | 18d | 2013-01-09 | 2013-01-31 | T19PA09901C0, T19PA09503C0 |  |  |  |  | 29.5d | 0d | ELECTRICAL [362.4 h]; Cost |  |  | S08PA26019C0 | PT | C | 19 | PA | ME | 260 | 19 | BILL 10 | B10 | S2 | FF | R00 | ACF07 | 260 | FF | MEP |  |  |  |  |  |

| ID | WBS | Activity | Duration | Start | Finish | Predecessors | Total float | Free float | Resources | change id | CCAD BUILDING(SET) | CCAD PHASE(SET) | CCAD FLOOR(SET) | CCAD ZONE(SET) | CCAD WORK(SET) | CCAD SECTION(SET) | CCAD SERIAL No.(SET) | CCAD CBS(SET) | CCAD BILL(SET) | CCAD HANDOVER(SET) | CCAD TAG(SET) | CCAD REV(SET) | CCADACF (SET) | CCAD SSCF | Change Order # | NEW ACTIVITY ID | CCAD CSA | Act Selector % | CCAD SUB ZONE MEP(SET) | CCAD DIVISION(SET) | CCAD MEQ | IDDD |
| --- | --- | --- | --- | --- | --- | --- | --- | --- | --- | --- | --- | --- | --- | --- | --- | --- | --- | --- | --- | --- | --- | --- | --- | --- | --- | --- | --- | --- | --- | --- | --- | --- |
|  | 10 | **Precommissioning Tesing & snagging (Public Area)** |  | 2013-01-31 | 2013-03-16 |  |  |  |  |  |  |  |  |  |  |  |  |  |  |  |  |  |  |  |  |  |  |  |  |  |  |  |
| T19TS01807C0 |  | PT-19 ; MEP de-snag, FIREM sign-off | 12d | 2013-01-31 | 2013-02-14 | T19PA26019C0, T19PA09503C0 | 29.5d | 0d | TESTING & COMMISSIONING [510 h]; Cost | T19TS01801C0 | PT | C | 19 | TS | SC | 018 | 01 | BILL 10 | B10 | S2 | 01 | R00 | ACF07 | 018 |  |  |  |  |  |  |  |  |
| T19TS01812C0 |  | PT-19 ; Touch-up & Clean / JV inspection /CIR /De-snag | 18d | 2013-02-14 | 2013-03-07 | T19PA05501C0, T19PA08709C0, T19PA09601C0, T19PA09701C0, T19PA09903C0, T19PA09907C0, T19PA11001C0, T19PA11009C0, T19TS01807C0, T19PA09503C0, T19CO04412C0, T19CO04413C0 | 29.5d | 0d | TESTING & COMMISSIONING [128 h]; Cost | T19TS01802C0 | PT | C | 19 | TS | SC | 018 | 02 | BILL 10 | B10 | S2 | 02 | R00 | ACF07 | 018 |  |  |  |  |  |  |  |  |
| T19TS01817C0 |  | PT-19 ; Consultant's final de-snag inspection | 7d | 2013-03-07 | 2013-03-16 | T19TS01812C0, T19TS01814C0 | 29.5d | 0d | Labor General [1 h]; Cost | T19TS01803C0 | PT | C | 19 | TS | SC | 018 | 03 | BILL 10 | B10 | S2 | 03 | R00 | ACF07 | 018 |  |  |  |  |  |  |  |  |
|  | 07 | **TR Room** |  | 2011-10-31 | 2012-12-12 |  |  |  |  |  |  |  |  |  |  |  |  |  |  |  |  |  |  |  |  |  |  |  |  |  |  |  |
| T19TR09201C0 |  | PT-19 ; Metal Studs (TR RM) | 18d | 2011-10-31 | 2011-11-23 | T19PA09201C0 SS | 138.5d | 0d | PARTITIONS [375 h]; PARTITIONS - Metal Studs [52 m]; Cost | T19TR09201C0 | PT | C | 19 | TR | PT | 092 | 01 | BILL 10 | B10 | S2 | 1F | R00 | ACF06 | 092 | 313 | 885 | GP | PMS |  |  |  |  |
| T19TR26026C0 |  | PT-19 ; 2nd Fix, Conduit (TR RM) | 30d | 2011-11-10 | 2011-12-17 | T19TR09201C0 SS+6d | 138.5d | 0d | ELECTRICAL [734.4 h]; Cost | T19TR26026C0 | PT | C | 19 | TR | ME | 260 | 26 | BILL 10 | B10 | S2 | 2F | R00 | ACF07 | 260 |  |  | MEP |  | 2n |  |  |  |
| T19TR09203C0 |  | PT-19 ; Partitions 1st face (TR RM) | 24d | 2011-11-24 | 2011-12-24 | T19TR09201C0 | 144.5d | 76d | PARTITIONS [52 m]; PARTITIONS [290 h]; Cost | T19TR09203C0 | PT | C | 19 | TR | PT | 092 | 03 | BILL 10 | B10 | S2 | 2F | R00 | ACF06 | 092 | 314 | 886 | GP | P1F |  |  |  |  |
| T19TR01005C0 |  | PT-19 ; 2nd, Wall Inspection by Consultant (TR RM) | 12d | 2011-12-18 | 2011-12-31 | T19TR26026C0 | 138.5d | 70d | Labor General [1.2 h]; Cost | T19TR01005C0 | PT | C | 19 | TR | ME | 010 | 05 | BILL 10 | B10 | S2 | WI | R00 | ACF07 | 010 |  |  | MEP |  | 2n |  |  |  |
| T19TR08101C0 |  | PT-19 ; Door Frames (TR RM) | 18d | 2011-12-28 | 2012-01-18 | T19TR09201C0, GNHE08101C0 FS+126d | 153.5d | 85d | ASSORTED DOORS [29 h]; Cost | T19TR08101C0 | PT | C | 19 | TR | DO | 081 | 01 | BILL 10 | B10 | S2 | DF | R00 | ACF06 | 081 | 316 | 20001090 |  |  |  | 08 |  |  |
| T19TR09205C0 |  | PT-19 ; Partitions Closing (TR RM) | 30d | 2012-03-25 | 2012-04-28 | T19TR01005C0, T19TR09201C0, T19TR09203C0, TAFOA09214C1 FF, T19TR08101C0 FF, T19PA09205C0 SS | 68.5d | 0d | PARTITIONS [52 m]; PARTITIONS [380 h]; Cost | T19TR09205C0 | PT | C | 19 | TR | PT | 092 | 05 | BILL 10 | B10 | S2 | FF | R00 | ACF06 | 092 | 315 | 887 | GP | P2F |  |  |  |  |
| T19TR09901C0 |  | PT-19 ; Wall Prime & 1st coat (TR RM) | 18d | 2012-04-29 | 2012-05-19 | T19CO04003C0, T19TR09205C0 | 68.5d | 0d | WALL PAINT [55 h]; WALL PAINT [68 m2]; Cost | T19TR09901C0 | PT | C | 19 | TR | PA | 099 | 01 | BILL 10 | B10 | S2 | 01 | R00 | ACF06 | 099 | 360 | 20001110 |  |  |  |  |  |  |
| T19TR23009C0 |  | PT-19 ; 2nd Fix, Inst of VAV'S CHW connection (TR RM) | 36d | 2012-04-29 | 2012-06-09 | T19TR09205C0 | 80.5d | 0d | MECHANICAL [1450.8 h]; Cost | T19TR23009C0 | PT | C | 19 | TR | ME | 230 | 09 | BILL 10 | B10 | S2 | 2F | R00 | ACF07 | 230 |  |  | MEP |  | 2n |  |  |  |
| T19TR23011C0 |  | PT-19 ; 2nd Fix, Inst of VCD's/FD's (TR RM) | 36d | 2012-04-29 | 2012-06-09 | T19TR09205C0 | 80.5d | 0d | MECHANICAL [1753.2 h]; Cost | T19TR23011C0 | PT | C | 19 | TR | ME | 230 | 11 | BILL 10 | B10 | S2 | 2F | R00 | ACF07 | 230 |  |  | MEP |  | 2n |  |  |  |
| T19TR26007C0 |  | PT-19 ; 2nd Fix, Cable Pulling (TR RM) | 36d | 2012-04-29 | 2012-06-09 | T19TR09203C0, T19TR09205C0 | 128.5d | 48d | ELECTRICAL [2683.2 h]; Cost | T19TR26007C0 | PT | C | 19 | TR | ME | 260 | 07 | BILL 10 | B10 | S2 | 2F | R00 | ACF07 | 260 |  |  | MEP |  | 2n |  |  |  |
| T19TR26009C0 |  | PT-19 ; 2nd Fix, Inst of Equipment (DB, TR, SG,BUS) (TR RM) | 54d | 2012-04-29 | 2012-07-01 | T19TR09205C0 | 92.5d | 0d | ELECTRICAL [3943.2 h]; Cost | T19TR26009C0 | PT | C | 19 | TR | ME | 260 | 09 | BILL 10 | B10 | S2 | 2F | R00 | ACF04 | 260 |  |  | MEP |  | 2n |  | E |  |
| T19TR26027C0 |  | PT-19 ; 2nd Fix, Wiring / Cabling (TR RM) | 30d | 2012-04-29 | 2012-06-02 | T19TR09203C0, T19TR09205C0 | 146.5d | 78d | ELECTRICAL [392.4 h]; Cost | T19TR26027C0 | PT | C | 19 | TR | ME | 260 | 27 | BILL 10 | B10 | S2 | 2F | R00 | ACF07 | 260 | 417 | 1318 | MEP |  | 2n |  |  |  |
| T19TR09501C0 |  | PT-19 ; Ceiling Grid and Service Tile (TR RM) | 24d | 2012-05-20 | 2012-06-17 | T19TR09205C0 SS+15d, T19TR09901C0 | 68.5d | 0d | CEILING GRID FOR GYPSUM [939.91 h]; CEILING GRID FOR GYPSUM [80.3 m2]; Cost | T19TR09501C0 | PT | C | 19 | TR | CE | 095 | 01 | BILL 10 | B10 | S2 | 01 | R00 | ACF06 | 095 | 336 | 1327 |  |  |  |  |  | 1 |
| T19TR09903C0 |  | PT-19 ; Wall - Final Paint (TR RM) | 12d | 2012-05-20 | 2012-06-02 | T19TR09901C0 | 195.25d | 126.75d | WALL PAINT [31 h]; WALL PAINT [37 m2]; Cost | T19TR09903C0 | PT | C | 19 | TR | PA | 099 | 03 | BILL 10 | B10 | S2 | 02 | R00 | ACF06 | 099 | 361 | 1312 |  |  |  |  |  |  |
| T19TR23013C0 |  | PT-19 ; 2nd Fix, Insulation of CHW pipe & Duct (TR RM) | 48d | 2012-06-10 | 2012-08-05 | T19TR23009C0, T19TR23011C0 | 80.5d | 0d | MECHANICAL [3064.8 h]; Cost | T19TR23013C0 | PT | C | 19 | TR | ME | 230 | 13 | BILL 10 | B10 | S2 | 2F | R00 | ACF07 | 230 |  |  | MEP |  | 2n |  |  |  |
| T19TR09601C0 |  | PT-19 ; Floor Finishes (TR RM) | 28d | 2012-06-18 | 2012-07-19 | T19TR09501C0 | 70.5d | 0d | ASSORTED FLOOR FINISH [4088 h]; ASSORTED FLOOR FINISH [2270 m2]; Cost | T19TR09601C0 | PT | C | 19 | TR | FF | 096 | 01 | BILL 10 | B10 | S2 | 01 | R00 | ACF06 | FF | 359 | 20001120 |  |  |  |  |  |  |
| T19TR09905C0 |  | PT-19 ; Ceiling Prime & 1st coat (TR RM) | 18d | 2012-06-18 | 2012-07-08 | T19TR09501C0 | 153.25d | 68d | CEILING PAINT [7 h]; CEILING PAINT [8 m2]; Cost | T19TR09905C0 | PT | C | 19 | TR | PA | 099 | 05 | BILL 10 | B10 | S2 | 01 | R00 | ACF06 | 099 | 362 | 1313 |  |  |  |  |  |  |
| T19TR23003C0 |  | PT-19 ; Final Fix, Inst of Grilles & Diffusers (TR RM) | 30d | 2012-06-18 | 2012-07-22 | T19TR09501C0 | 104.5d | 36d | MECHANICAL [1498.8 h]; Cost | T19TR23003C0 | PT | C | 19 | TR | ME | 230 | 03 | BILL 10 | B10 | S2 | FF | R00 | ACF07 | 230 |  |  | MEP |  | FF |  |  |  |
| T19TR23023C0 |  | PT-19 ; 2nd Fix, Flexible ducts (TR RM) | 30d | 2012-06-18 | 2012-07-22 | T19TR09205C0, T19TR09501C0 | 104.5d | 36d | MECHANICAL [30 h]; Cost | T19TR23023C0 | PT | C | 19 | TR | ME | 230 | 23 | BILL 10 | B10 | S2 | 2F | R00 | ACF07 | 230 | 412 | 20001140 | MEP |  | 2n |  |  |  |
| T19TR23074C0 |  | PT-19 ; Final Fix, Grilles, panels & diffusers (TR RM) | 30d | 2012-06-18 | 2012-07-22 | T19TR09501C0 | 104.5d | 36d | MECHANICAL [1498.8 h]; Cost | T19TR23074C0 | PT | C | 19 | TR | ME | 230 | 74 | BILL 10 | B10 | S2 | FF | R00 | ACF07 | 230 | 419 | 20001160 | MEP |  | FF |  |  |  |
| T19TR26005C0 |  | PT-19 ; 2nd Fix, Wiring for Power/Lighting/Emergency (TR RM) | 30d | 2012-06-18 | 2012-07-22 | T19TR26026C0, T19TR09501C0 | 104.5d | 36d | ELECTRICAL [392.4 h]; Cost | T19TR26005C0 | PT | C | 19 | TR | ME | 260 | 05 | BILL 10 | B10 | S2 | 2F | R00 | ACF07 | 260 |  |  | MEP |  | 2n |  |  |  |
| T19TR26015C0 |  | PT-19 ; Final Fix, Inst of Ceiling rose (TR RM) | 30d | 2012-06-18 | 2012-07-22 | T19TR09501C0 | 104.5d | 36d | ELECTRICAL [61.2 h]; Cost | T19TR26015C0 | PT | C | 19 | TR | ME | 260 | 15 | BILL 10 | B10 | S2 | FF | R00 | ACF07 | 260 |  |  | MEP |  | FF |  |  |  |
| T19TR26019C0 |  | PT-19 ; Final Fix, Inst of Light fittings (TR RM) | 36d | 2012-06-18 | 2012-07-29 | T19TR09501C0 | 98.5d | 30d | ELECTRICAL [7815.6 h]; Cost | T19TR26019C0 | PT | C | 19 | TR | ME | 260 | 19 | BILL 10 | B10 | S2 | FF | R00 | ACF07 | 260 |  |  | MEP |  | FF |  |  |  |
| T19TR26076C0 |  | PT-19 ; Final Fix, Lighting fittings (TR RM) | 36d | 2012-06-18 | 2012-07-29 | T19TR09501C0 | 98.5d | 30d | ELECTRICAL [7815.6 h]; Cost | T19TR26076C0 | PT | C | 19 | TR | ME | 260 | 76 | BILL 10 | B10 | S2 | FF | R00 | ACF07 | 260 | 420 | 20001170 | MEP |  | FF |  |  |  |
| T19TR27002C0 |  | PT-19 ; 2nd Fix, Dressing of ELV panels (TR RM) | 30d | 2012-06-18 | 2012-07-22 | T19TR09205C0, T19TR27020C0 SS | 68.5d | 0d | ELECTRICAL [273.6 h]; Cost | T19TR27002C0 | PT | C | 19 | TR | ME | 270 | 02 | BILL 10 | B10 | S2 | 2F | R00 | ACF07 | 270 |  |  | MEP |  | 2n |  |  |  |
| T19TR27020C0 |  | PT-19 ; 2nd Fix, Inst of ELV Equipment (Panels) (TR RM) | 48d | 2012-06-18 | 2012-08-12 | T19TR09205C0, T19TR09501C0 | 68.5d | 0d | ELECTRICAL [1819.2 h]; Cost | T19TR27020C0 | PT | C | 19 | TR | ME | 270 | 20 | BILL 10 | B10 | S2 | 2F | R00 | ACF04 | 270 |  |  | MEP |  | 2n |  | E |  |
| T19TR26013C0 |  | PT-19 ; Final Fix, Termination & Gladding of Cables (TR RM) | 30d | 2012-07-02 | 2012-08-05 | T19TR26009C0, T19TR09501C0 | 92.5d | 24d | ELECTRICAL [148.8 h]; Cost | T19TR26013C0 | PT | C | 19 | TR | ME | 260 | 13 | BILL 10 | B10 | S2 | FF | R00 | ACF07 | 260 |  |  | MEP |  | FF |  |  |  |
| T19TR08105C0 |  | PT-19 ; Doors (TR RM) | 18d | 2012-07-21 | 2012-08-09 | T19TR08101C0, T19TR09501C0, T19TR09601C0, T19TR09901C0 | 119.25d | 0d | ASSORTED DOORS [60 h]; ASSORTED DOORS [6 no]; Cost | T19TR08105C0 | PT | C | 19 | TR | DO | 081 | 05 | BILL 10 | B10 | S2 | DR | R00 | ACF06 | 081 | 317 | 1325 |  |  |  | 08 |  |  |
| T19TR21115C0 |  | PT-19 ; 2nd Fix, Gaseous Fire Suppression (TR RM) | 36d | 2012-07-21 | 2012-09-02 | T19TR09601C0 | 70.5d | 2d | MECHANICAL [2626.8 h]; Cost | T19TR21115C0 | PT | C | 19 | TR | ME | 211 | 15 | BILL 10 | B10 | S2 | 2F | R00 | ACF07 | 211 | 411 | 20001130 | MEP |  | 2n |  |  |  |
| T19TR27030C0 |  | PT-19 ; Final Fix, Inst of ELV device (Detector/Speaker) (TR RM) | 36d | 2012-07-23 | 2012-09-04 | T19TR27002C0, T19TR09501C0 | 68.5d | 0d | ELECTRICAL [3571.2 h]; Cost | T19TR27030C0 | PT | C | 19 | TR | ME | 270 | 30 | BILL 10 | B10 | S2 | FF | R00 | ACF07 | 270 |  |  | MEP |  | FF |  |  |  |
| T19TR01006C0 |  | PT-19 ; 2nd, Ceiling Inspection by Consultants (TR RM) | 12d | 2012-08-06 | 2012-08-21 | T19TR23009C0, T19TR23011C0, T19TR23013C0, T19TR26007C0, T19TR09501C0 | 80.5d | 12d | Labor General [1.2 h]; Cost | T19TR01006C0 | PT | C | 19 | TR | ME | 010 | 06 | BILL 10 | B10 | S2 | CI | R00 | ACF07 | 010 |  |  | MEP |  | 2n |  |  |  |
| T19TR08709C0 |  | PT-19 ; Ironmongery (TR RM) | 18d | 2012-08-11 | 2012-09-02 | T19TR08105C0 | 119.25d | 50.75d | IRONMONGERY [80 h]; IRONMONGERY [8 no]; Cost | T19TR08709C0 | PT | C | 19 | TR | DO | 087 | 09 | BILL 10 | B10 | S2 | IM | R00 | ACF06 | 087 | 322 | 20001100 |  |  |  | 08 |  |  |
| T19TR09503C0 |  | PT-19 ; Ceiling closure (TR RM) | 20d | 2012-09-05 | 2012-09-27 | T19TR01006C0, T19TR09501C0, T19TR21115C0, T19TR26005C0, T19TR26007C0, T19TR26026C0, T19TR26027C0, T19TR23074C0, T19TR23003C0, T19TR26076C0, T19TR26015C0, T19TR26013C0, T19TR26019C0, T19TR27030C0, T19TR23023C0 | 68.5d | 0d | ASSORTED CEILING FINISH [105.78 h]; CEILING GYPSUM [26.24 h]; ASSORTED CEILING FINISH [172 m2]; CEILING GYPSUM [80 m2]; Cost | T19TR09503C0 | PT | C | 19 | TR | CE | 095 | 03 | BILL 10 | B10 | S2 | 02 | R00 | ACF06 | 095 | 337 | 20001080 |  |  |  |  |  |  |
| T19TR09907C0 |  | PT-19 ; Ceiling - Final paint (TR RM) | 12d | 2012-09-29 | 2012-10-11 | T19TR09905C0, T19TR09503C0 | 85.25d | 16.75d | CEILING PAINT [4 h]; CEILING PAINT [4 m2]; Cost | T19TR09907C0 | PT | C | 19 | TR | PA | 099 | 07 | BILL 10 | B10 | S2 | 02 | R00 | ACF06 | 099 | 363 | 1314 |  |  |  |  |  |  |
| T19TR26017C0 |  | PT-19 ; Final Fix, Inst of Switch/Sockets (TR RM) | 12d | 2012-09-29 | 2012-10-11 | T19TR09901C0, T19TR09503C0 | 68.5d | 0d | ELECTRICAL [362.4 h]; Cost | T19TR26017C0 | PT | C | 19 | TR | ME | 260 | 17 | BILL 10 | B10 | S2 | FF | R00 | ACF07 | 260 |  |  | MEP |  | FF |  |  |  |
| T19TR01802C0 |  | PT-19 ; MEP de-snag, FIREM sign-off | 16.75d | 2012-10-13 | 2012-11-03 | T19TR26017C0, T19TR23074C0, T19TR23003C0, T19TR26076C0, T19TR26013C0, T19TR26015C0, T19TR26019C0, T19TR27030C0 | 68.5d | 0d | TESTING & COMMISSIONING [255 h]; Cost | S05CO01851C0 | PT | C | 19 | TR | SC | 018 | 53 | BILL 10 | B10 | S2 | 01 | R00 | ACF07 | 018 |  |  |  |  |  |  |  |  |
| T19TR01801C0 |  | PT-19 ; Touch-up & Clean / JV inspection /CIR /De-snag | 19.75d | 2012-11-03 | 2012-11-27 | T19TR01802C0, T19TR08709C0, T19TR09601C0, T19TR09903C0, T19TR09907C0, T19TR09503C0 | 68.5d | 0d | TESTING & COMMISSIONING [64 h]; Cost | T19TR01851C0 | PT | C | 19 | TR | SC | 018 | 51 | BILL 10 | B10 | S2 | 02 | R00 | ACF07 | 018 | 396 |  |  |  |  |  |  |  |
| T19TR01803C0 |  | PT-19 ; Consultant's final de-snag inspection | 12d | 2012-11-27 | 2012-12-12 | T19TR01801C0 | 68.5d | 43.6d | Labor General [1 h]; Cost | CP3TS01803C0 | PT | C | 19 | TR | SC | 018 | 03 | BILL 10 | B10 | S1 | 03 | R00 | ACF07 | 018 |  |  |  |  |  |  |  |  |

| ID | WBS | Activity | Duration | Start | Finish | Predecessors | Complete | Remaining | Planned start | Planned finish | Total float | Free float | Resources | Cost | Actual cost | change id | RENZ % COMPLETE | Phase | CCAD BUILDING(SET) | CCAD PHASE(SET) | CCAD FLOOR(SET) | CCAD ZONE(SET) | CCAD WORK(SET) | CCAD SECTION(SET) | CCAD SERIAL No.(SET) | Area/ Department | Grids | Are | Weight & Nos | Process | Levels | CCAD CBS(SET) | CCAD BILL(SET) | CCAD HANDOVER(SET) | CCAD TAG(SET) | CCAD REV(SET) | CCADACF (SET) | CCAD SSCF | Claimed This Month | CCAD CSA | P_811 | P_711 | U% | CCAD SUB ZONE MEP(SET) | Act Selector % | Change Order # | NEW ACTIVITY ID | CCAD DIVISION(SET) | CCAD MEQ |
| --- | --- | --- | --- | --- | --- | --- | --- | --- | --- | --- | --- | --- | --- | --- | --- | --- | --- | --- | --- | --- | --- | --- | --- | --- | --- | --- | --- | --- | --- | --- | --- | --- | --- | --- | --- | --- | --- | --- | --- | --- | --- | --- | --- | --- | --- | --- | --- | --- | --- |
|  | 20 | **Level 20** |  | 2011-04-12 | 2013-04-15 |  |  |  |  |  |  |  |  |  |  |  |  |  |  |  |  |  |  |  |  |  |  |  |  |  |  |  |  |  |  |  |  |  |  |  |  |  |  |  |  |  |  |  |  |
|  | 01 | **Structure & Envelopment** |  | 2011-04-12 | 2012-05-20 |  |  |  |  |  |  |  |  |  |  |  |  |  |  |  |  |  |  |  |  |  |  |  |  |  |  |  |  |  |  |  |  |  |  |  |  |  |  |  |  |  |  |  |  |
| T20SB03303C0 |  | PT-20 ; Corewall Concrete (Zone SB) | 3d | 2011-04-12 A | 2011-04-18 A | T19SB03303C0 | 100% |  | 2011-03-31 | 2011-04-03 |  |  | CONCRETE [6280 h]; CONCRETE [158 m3]; Cost |  |  | T20SB03303C0 | 100 | Z2 | PT | C | 20 | SB | CT | 033 | 03 | PA | TRUS | D | A10 | EREC | 10FLR | BILL 10 | B10 | S2 | 04 | R00 | ACF03 | 033 |  |  |  |  |  |  |  |  |  |  |  |
| T20SA03301C0 |  | PT-20 ; Corewall Concrete (Zone SA) | 3d | 2011-04-21 A | 2011-04-27 A | T19SA03301C0 | 100% |  | 2011-03-16 | 2011-03-20 |  |  | CONCRETE [6280 h]; CONCRETE [158 m3]; Cost |  |  | T20SA03301C0 | 100 | Z2 | PT | C | 20 | SA | CT | 033 | 01 | PA | TRUS | D | A10 | EREC | 10FLR | BILL 10 | B10 | S2 | 04 | R00 | ACF03 | 033 |  |  |  |  |  |  |  |  |  |  |  |
| T20CO05101C0 |  | PT-20 ; Erection of Structural Steel of 20 th Floor (Common Zone) | 5d | 2011-07-06 A | 2011-07-31 A | T19CO05103C0, T20SA03301C0, T20SB03303C0 | 100% |  | 2011-07-31 | 2011-08-06 |  |  | STRUCTURAL STEEL [10019 h]; STRUCTURAL STEEL [327 T(Fe)]; Cost |  |  | T20CO05101C0 |  | Z2 | PT | C | 20 | CO | ST | 051 | 01 | PA | 10TH | E | A12A | EREC | 11FLR | BILL 10 | B10 | S2 | 01 | R00 | ACF03 | 051 | 417202.53 | ST |  |  |  |  |  |  |  |  |  |
| T20CO05103C0 |  | PT-20 ; Alignment & welding of 20th Floor (Common Zone) | 3d | 2011-08-10 A | 2011-09-29 A | T20CO05101C0 | 100% |  | 2011-08-01 | 2011-08-04 |  |  | STRUCTURAL STEEL [1152 h]; Cost |  |  | T20CO05103C0 |  | Z2 | PT | C | 20 | CO | ST | 051 | 03 | PA | 10TH | E | A12A | EREC | 11FLR | BILL 10 | B10 | S2 | 02 | R00 | ACF03 | 051 |  | ST | 90 | 0 |  |  |  |  |  |  |  |
| T20CO05305C0 |  | PT-20 ; Metal Decking 20 FLR (Common Zone) | 10d | 2011-08-10 A | 2011-09-29 A | T20CO05103C0, T21CO05101C0, T19CO05305C0 FF+9d | 100% |  | 2011-08-20 | 2011-09-03 |  |  | METAL DECKING [2727 h]; METAL DECKING [3452 m2]; Cost |  |  | T20CO05305C0 |  | Z2 | PT | C | 20 | CO | ST | 053 | 05 | PA | 10TH | E | A12A | MDEC | 11FLR | BILL 10 | B10 | S2 | 03 | R00 | ACF03 | 053 |  | ST | 90 | 0 |  |  |  |  |  |  |  |
| T20CO03399C0 |  | PT-20 ; Concrete on Metal Decking 20 FLR (Common Zone) | 10d | 2011-09-05 A | 2011-10-02 | T20CO05305C0 | 80% | 2d | 2011-09-12 | 2011-09-22 | 25.6d | 0d | CONCRETE [23776 h]; CONCRETE [598 m3]; Cost |  |  | T20CO05335C0 |  | Z2 | PT | C | 20 | CO | CT | 033 | 99 | PA | 10TH | E | A12A | MDEC | 11FLR | BILL 10 | B10 | S2 | 08 | R00 | ACF03 | 033 |  |  |  |  |  |  |  |  |  |  |  |
| T20CO07807C0 |  | PT-20 ; Cementitious Fire proofing Lvl 20 (Common Zone) | 12d | 2011-10-03 | 2011-10-17 | T21CO03399C0 |  |  |  |  | 29.49d | 0d | CEMENTITIOUS FIREPROOFING [3066 h]; CEMENTITIOUS FIREPROOFING [6132 m2]; Cost |  |  | T20CO07807C0 |  | Z2 | PT | C | 20 | CO | ST | 078 | 07 | PA | 10TH | E | A12A | FIRE | 11FLR | BILL 10 | B10 | S2 | 04 | R00 | ACF03 | 078 |  | ST |  |  |  |  |  |  |  |  |  |
| T20CO04403C0 |  | PT-20 ; C2 Bracket (Common Zone) | 30d | 2011-12-21 | 2012-01-26 | T20CO07807C0, T20CO03399C0 FS+21d, T15CO04407C0 |  |  |  |  | 15.65d | 0d | FACADE CURTAIN WALL 2 [926 h]; Cost |  |  | T20CO04403C0 |  |  | PT | C | 20 | CO | FA | 044 | 03 |  |  |  |  |  |  | BILL 10 | B10 | S2 | FC2 | R00 | ACF05 | 044 |  | FA |  |  |  |  |  |  |  |  |  |
| T20CO04405C0 |  | PT-20 ; C2 Transom & Mullion (Common Zone) | 30d | 2012-01-08 | 2012-02-13 | T20CO04403C0 SS+14d |  |  |  |  | 15.65d | 0d | FACADE CURTAIN WALL 2 [3704.2 h]; Cost |  |  | T20CO04405C0 |  |  | PT | C | 20 | CO | FA | 044 | 05 |  |  |  |  |  |  | BILL 10 | B10 | S2 | FC2 | R00 | ACF05 | 044 |  | FA |  |  |  |  |  |  |  |  |  |
| T20CO04407C0 |  | PT-20 ; C2 Glazing (Common Zone) | 30d | 2012-01-08 | 2012-02-13 | T20CO04405C0 SS, T20CO04405C0 FF |  |  |  |  | 15.65d | 0d | FACADE CURTAIN WALL 2 [4583.5 h]; FACADE CURTAIN WALL 4 [1239.4 h]; FACADE CURTAIN WALL 5 [287.1 h]; FACADE CURTAIN WALL 2 [1675 m2]; FACADE CURTAIN WALL 4 [453 m2]; FACADE CURTAIN WALL 5 [105 m2]; FACADE TOTAL QUANTITY m2 [2233 m2]; Cost |  |  | T20CO04407C0 |  |  | PT | C | 20 | CO | FA | 044 | 07 |  |  |  |  |  |  | BILL 10 | B10 | S2 | FC2 | R00 | ACF05 | 044 |  | FA |  |  |  |  |  |  |  |  |  |
| T20CO04415C0 |  | PT-20 ; SG Catwalk Installation (Common Zone) | 52d | 2012-03-20 | 2012-05-20 | TEXCO04407C0 SS+14d, T19CO04425C0 SS |  |  |  |  | 34.02d | 0d | Labor General [4687.6 h]; Cost |  |  | I05CO04411C0 |  |  | PT | C | 20 | CO | FA | 044 | 11 |  |  |  |  |  |  | BILL 10 | B10 | S2 | SG | R00 | ACF05 | 044 |  | FA |  |  |  |  |  |  |  |  |  |
|  | 02 | **Royal PAT RM-1** |  | 2011-09-05 | 2013-04-15 |  |  |  |  |  |  |  |  |  |  |  |  |  |  |  |  |  |  |  |  |  |  |  |  |  |  |  |  |  |  |  |  |  |  |  |  |  |  |  |  |  |  |  |  |
| T20R122019C0 |  | PT-20 ; 1st Fix, Inst of Drainage pipe (ceiling) (Royal PAT RM) | 54d | 2011-09-05 A | 2012-02-22 | T20R123001C0, T20R126013C0 SS+9d | 5% | 51.3d | 2012-01-03 | 2012-03-06 | 37.56d | 0d | PLUMBING [2068.8 h]; Cost [74493.8 AED] | 74,493.83 | 3,724.69 | T20R122019C0 |  |  | PT | C | 20 | R1 | ME | 220 | 19 |  |  |  |  |  |  | BILL 10 | B10 | S2 | 1F | R00 | ACF04 | 220 |  | MEP |  |  | 0 | 1S | M1F |  |  |  |  |
| T20R123001C0 |  | PT-20 ; 1st Fix, Inst. of Supports for MEP (Royal PAT RM) | 36d | 2011-09-05 A | 2011-11-30 | T20CO07807C0 | 5% | 34.2d | 2011-10-15 | 2011-11-29 | 34.81d | 0d | MECHANICAL [800.4 h]; Cost [45150.4 AED] | 45,150.38 | 2,257.52 | T20R123001C0 |  |  | PT | C | 20 | R1 | ME | 230 | 01 |  |  |  |  |  |  | BILL 10 | B10 | S2 | 1F | R00 | ACF04 | 230 |  | MEP |  |  | 0 | 1S | M1F |  |  |  |  |
| T20R126001C0 |  | PT-20 ; 1st Fix, Inst of Trunking/Conduiting (Royal PAT RM) | 48d | 2011-09-05 A | 2012-01-25 | T20CO07807C0, T20R123001C0 | 5% | 45.6d | 2011-11-30 | 2012-01-26 | 37.56d | 0d | ELECTRICAL [734.4 h]; Cost [37790.1 AED] | 37,790.1 | 1,889.5 | T20R126001C0 |  |  | PT | C | 20 | R1 | ME | 260 | 01 |  |  |  |  |  |  | BILL 10 | B10 | S2 | 1F | R00 | ACF04 | 260 |  | MEP |  |  |  | 1S | M1F |  |  |  |  |
| T20R127010C0 |  | PT-20 ; 1st Fix, Inst of Trunking for ELV system (Royal PAT RM) | 48d | 2011-11-30 | 2012-01-28 | T20CO07807C0, T20R123001C0, T20R126001C0 SS+9d |  |  |  |  | 37.56d | 0d | ELECTRICAL [1512 h]; Cost |  |  | T20R127010C0 |  |  | PT | C | 20 | R1 | ME | 270 | 10 |  |  |  |  |  |  | BILL 10 | B10 | S2 | 1F | R00 | ACF04 | 270 |  | MEP |  |  |  | 1S | M1F |  |  |  |  |
| T20R126013C0 |  | PT-20 ; 1st Fix, Inst of Cable Tray (Royal PAT RM) | 48d | 2011-12-12 | 2012-02-08 | T20CO07807C0, T20R123001C0, T20R127010C0 SS+9d |  |  |  |  | 37.56d | 0d | ELECTRICAL [355.2 h]; Cost |  |  | T20R126013C0 |  |  | PT | C | 20 | R1 | ME | 260 | 13 |  |  |  |  |  |  | BILL 10 | B10 | S2 | 1F | R00 | ACF04 | 260 |  | MEP |  |  |  | 1S | M1F |  |  |  |  |
| T20R122005C0 |  | PT-20 ; 1st Fix, Inst of Water supply pipe (ceiling) (Royal PAT RM) | 60d | 2011-12-22 | 2012-03-04 | T20R122019C0 SS+9d, T20R123001C0 |  |  |  |  | 37.56d | 0d | PLUMBING [4548 h]; Cost |  |  | T20R122005C0 |  |  | PT | C | 20 | R1 | ME | 220 | 05 |  |  |  |  |  |  | BILL 10 | B10 | S2 | 1F | R00 | ACF04 | 220 |  | MEP |  |  |  | 1S | M1F |  |  |  |  |
| T20R109201C0 |  | PT-20 ; Metal Studs (Royal PAT RM) | 42d | 2011-12-24 | 2012-02-13 | T20R123001C0, T20CO04407C0 FF, T20CO04405C0 FF |  |  |  |  | 15.65d | 0d | PARTITIONS [2483 h]; PARTITIONS - Metal Studs [344 m]; Cost |  |  | T20R109201C0 |  |  | PT | C | 20 | R1 | PT | 092 | 01 |  |  |  |  |  |  | BILL 10 | B10 | S2 | 1F | R00 | ACF06 | 092 |  | GP |  |  |  |  | PMS | 313 | 944 |  |  |
| T20R121111C0 |  | PT-20 ; 1st Fix, Inst of Sprinkler main pipe (Royal PAT RM) | 48d | 2012-01-03 | 2012-02-29 | T20R122005C0 SS+9d, T20R123001C0 |  |  |  |  | 37.56d | 0d | MECHANICAL [656.4 h]; Cost |  |  | T20R121111C0 |  |  | PT | C | 20 | R1 | ME | 211 | 11 |  |  |  |  |  |  | BILL 10 | B10 | S2 | 1F | R00 | ACF04 | 211 |  | MEP |  |  |  | 1S | M1F |  |  |  |  |
| T20R122007C0 |  | PT-20 ; 1st Fix, Inst of Medical Gas pipe (Royal PAT RM) | 48d | 2012-01-14 | 2012-03-11 | T20R121111C0 SS+9d, T20R123001C0 |  |  |  |  | 40.81d | 25.16d | PLUMBING [894 h]; Cost |  |  | T20R122007C0 |  |  | PT | C | 20 | R1 | ME | 220 | 07 |  |  |  |  |  |  | BILL 10 | B10 | S2 | 1F | R00 | ACF04 | 220 |  | MEP |  |  |  | 1S | M1F |  |  |  |  |
| T20R123017C0 |  | PT-20 ; 1st Fix, Inst of CHW pipe (Royal PAT RM) | 54d | 2012-01-29 | 2012-04-02 | T20R121111C0 SS+14d, T20R123001C0, T20R105503C0 FF+18d |  |  |  |  | 29.4d | 0d | MECHANICAL [2467.2 h]; Cost |  |  | T20R123017C0 |  |  | PT | C | 20 | R1 | ME | 230 | 17 |  |  |  |  |  |  | BILL 10 | B10 | S2 | 1F | R00 | ACF04 | 230 |  | MEP |  |  |  | 1S | M1F |  |  |  |  |
| T20R127001C0 |  | PT-20 ; 1st Fix, Wiring/ Cabling work (Royal PAT RM) | 48d | 2012-02-08 | 2012-04-04 | T20R126001C0, T20R126013C0, T20R127010C0 |  |  |  |  | 91.56d | 75.91d | ELECTRICAL [392.4 h]; Cost |  |  | T20R127001C0 |  |  | PT | C | 20 | R1 | ME | 270 | 01 |  |  |  |  |  |  | BILL 10 | B10 | S2 | 1F | R00 | ACF04 | 270 |  | MEP |  |  |  | 1S | M1F |  |  |  |  |
| T20R123023C0 |  | PT-20 ; 1st Fix, Inst of Main Ducting (Royal PAT RM) | 60d | 2012-02-11 | 2012-04-21 | T20R123001C0, T20R123017C0 SS+10d |  |  |  |  | 29.4d | 0d | MECHANICAL [8022 h]; Cost |  |  | T20R123023C0 |  |  | PT | C | 20 | R1 | ME | 230 | 23 |  |  |  |  |  |  | BILL 10 | B10 | S2 | 1F | R00 | ACF04 | 230 |  | MEP |  |  |  | 1S | M1F |  |  |  |  |
| T20R105503C0 |  | PT-20 ; Ceiling Support for medical equipment (Royal PAT RM) | 24d | 2012-02-13 | 2012-03-12 | T20R109201C0, TAFCI22001R20 FS+72d |  |  |  |  | 29.4d | 0d | SECONDARY STEEL [63 h]; STRUCTURAL STEEL [5 T(Fe)]; Cost |  |  | D03EY05503C0 |  |  | PT | C | 20 | R1 | SW | 055 | 03 |  |  |  |  |  |  | BILL 10 | B10 | S2 | 03 | R00 | ACF03 | b |  |  |  |  |  |  |  | 335 | 962 |  |  |
| T20R105511C0 |  | PT-20 ; Wall reinforcement for MEP/Medical (Royal PAT RM) | 24d | 2012-02-13 | 2012-03-12 | T20R109201C0, TAFCI22001R02 FS+72d |  |  |  |  | 39.52d | 23.88d | SECONDARY STEEL [27 h]; Cost |  |  | T20R105511C0 |  |  | PT | C | 20 | R1 | SW | 055 | 11 |  |  |  |  |  |  | BILL 10 | B10 | S2 | 03 | R00 | ACF03 | b |  |  |  |  |  |  |  |  |  |  |  |
| T20R109203C0 |  | PT-20 ; Partitions 1st face (Royal PAT RM) | 36d | 2012-02-13 | 2012-03-26 | T20R109201C0 |  |  |  |  | 27.52d | 11.88d | PARTITIONS [344 m]; PARTITIONS [1950 h]; Cost |  |  | T20R109203C0 |  |  | PT | C | 20 | R1 | PT | 092 | 03 |  |  |  |  |  |  | BILL 10 | B10 | S2 | 2F | R00 | ACF06 | 092 |  | GP |  |  |  |  | P1F | 314 | 945 |  |  |
| T20R122011C0 |  | PT-20 ; 2nd Fix, Drainage/Water pipe (wall) (Royal PAT RM) | 42d | 2012-02-13 | 2012-04-02 | T20R109201C0 |  |  |  |  | 15.65d | 0d | PLUMBING [1378.8 h]; Cost |  |  | T20R122011C0 |  |  | PT | C | 20 | R1 | ME | 220 | 11 |  |  |  |  |  |  | BILL 10 | B10 | S2 | 2F | R00 | ACF07 | 220 |  | MEP |  |  |  | 2n |  |  |  |  |  |
| T20R122015C0 |  | PT-20 ; 2nd Fix, Medical Gas pipe (Royal PAT RM) | 42d | 2012-02-13 | 2012-04-02 | T20R109201C0, T20R122007C0 SS |  |  |  |  | 15.65d | 0d | PLUMBING [1214.4 h]; Cost |  |  | T20R122015C0 |  |  | PT | C | 20 | R1 | ME | 220 | 15 |  |  |  |  |  |  | BILL 10 | B10 | S2 | 2F | R00 | ACF07 | 220 |  | MEP |  |  |  | 2n |  |  |  |  |  |
| T20R126009C0 |  | PT-20 ; 2nd Fix, Inst of Wall conduites (Royal PAT RM) | 42d | 2012-02-13 | 2012-04-02 | T20R109201C0 |  |  |  |  | 15.65d | 0d | ELECTRICAL [734.4 h]; Cost |  |  | T20R126009C0 |  |  | PT | C | 20 | R1 | ME | 260 | 09 |  |  |  |  |  |  | BILL 10 | B10 | S2 | 2F | R00 | ACF07 | 260 |  | MEP |  |  |  | 2n |  |  |  |  |  |
| T20R121117C0 |  | PT-20 ; 1st Fix, Inst of Sprinkler branch pipe (Royal PAT RM) | 48d | 2012-02-29 | 2012-04-25 | T20R109201C0, T20R121111C0, T20R105503C0 FF+18d |  |  |  |  | 73.56d | 57.91d | MECHANICAL [561.6 h]; Cost |  |  | T20R121117C0 |  |  | PT | C | 20 | R1 | ME | 211 | 17 |  |  |  |  |  |  | BILL 10 | B10 | S2 | 1F | R00 | ACF04 | 211 |  | MEP |  |  |  | 1S | M1F |  |  |  |  |
| T20R108103C0 |  | PT-20 ; Door Frames (Royal PAT RM) | 36d | 2012-03-01 | 2012-04-12 | T20R109201C0 SS+14d, GNHE08101C0 FS+126d, T20PA08103C0 SS+3d |  |  |  |  | 45.4d | 0d | ASSORTED DOORS [226 h]; Cost |  |  | T20R108103C0 |  |  | PT | C | 20 | R1 | DO | 081 | 03 |  |  |  |  |  |  | BILL 10 | B10 | S2 | DF | R00 | ACF06 | 081 |  |  |  |  |  |  |  | 316 | 947 | 08 |  |
| T20R101005C0 |  | PT-20 ; 2nd, Wall Inspection by Consultant (Royal PAT RM) | 5.88d | 2012-04-02 | 2012-04-09 | T20R122011C0, T20R122015C0, T20R126009C0 |  |  |  |  | 15.65d | 0d | Labor General [1.2 h]; Cost |  |  | T20R101005C0 |  |  | PT | C | 20 | R1 | ME | 010 | 05 |  |  |  |  |  |  | BILL 10 | B10 | S2 | WI | R00 | ACF07 | 010 |  | MEP |  |  |  | 2n |  |  |  |  |  |
| T20R123009C0 |  | PT-20 ; 2nd Fix, Inst of VAV'S CHW connection (Royal PAT RM) | 42d | 2012-04-02 | 2012-05-21 | T20R123017C0 |  |  |  |  | 45.4d | 16d | MECHANICAL [1450.8 h]; Cost |  |  | T20R123009C0 |  |  | PT | C | 20 | R1 | ME | 230 | 09 |  |  |  |  |  |  | BILL 10 | B10 | S2 | 2F | R00 | ACF07 | 230 |  | MEP |  |  |  | 2n |  |  |  |  |  |
| T20R109205C0 |  | PT-20 ; Partitions Closing (Royal PAT RM) | 35.88d | 2012-04-09 | 2012-05-21 | T20R101005C0, T20R105511C0, T20R109203C0, T20R122005C0, T20R122019C0, TAFOA09214C1 FF, T20R108103C0 FF |  |  |  |  | 15.65d | 0d | PARTITIONS [344 m]; PARTITIONS [2496 h]; Cost |  |  | T20R109205C0 |  |  | PT | C | 20 | R1 | PT | 092 | 05 |  |  |  |  |  |  | BILL 10 | B10 | S2 | FF | R00 | ACF06 | 092 |  | GP |  |  |  |  | P2F | 315 | 946 |  |  |
| T20R123008C0 |  | PT-20 ; 1st Fix, Inst of VCD's/FD's (Royal PAT RM) | 48d | 2012-04-21 | 2012-06-17 | T20R123023C0, T20R105503C0 FF+18d |  |  |  |  | 29.4d | 13.75d | MECHANICAL [1753.2 h]; Cost |  |  | T20R123008C0 |  |  | PT | C | 20 | R1 | ME | 230 | 08 |  |  |  |  |  |  | BILL 10 | B10 | S2 | 1F | R00 | ACF04 | 230 |  | MEP |  |  |  | 1S | M1F |  |  |  |  |
| T20R123015C0 |  | PT-20 ; 2nd Fix, Insulation of CHW pipe & Duct (Royal PAT RM) | 48d | 2012-04-21 | 2012-06-17 | T20R123009C0 SS, T20R123017C0, T20R123023C0 |  |  |  |  | 29.4d | 13.75d | MECHANICAL [3064.8 h]; Cost |  |  | T20R123015C0 |  |  | PT | C | 20 | R1 | ME | 230 | 15 |  |  |  |  |  |  | BILL 10 | B10 | S2 | 2F | R00 | ACF07 | 230 |  | MEP |  |  |  | 2n |  |  |  |  |  |
| T20R107103C0 |  | PT-20 ; Waterproofing (Royal PAT RM) | 12d | 2012-05-21 | 2012-06-04 | T20R108103C0, T20R109205C0 |  |  |  |  | 127.65d | 0d | THERMAL & MOISTURE [432 h]; THERMAL & MOISTURE [2833 m2]; Cost |  |  | T20R107103C0 |  |  | PT | C | 20 | R1 | FF | 071 | 03 |  |  |  |  |  |  | BILL 10 | B10 | S2 | 01 | R00 | ACF03 | 071 |  |  |  |  |  |  |  | 105 | 999 |  |  |
| T20R109901C0 |  | PT-20 ; Wall Prime & 1st coat (Royal PAT RM) | 36d | 2012-05-21 | 2012-07-03 | T20R109205C0 |  |  |  |  | 15.65d | 0d | WALL PAINT [423 h]; WALL PAINT [527 m2]; Cost |  |  | T20R109901C0 |  |  | PT | C | 20 | R1 | PA | 099 | 01 |  |  |  |  |  |  | BILL 10 | B10 | S2 | 01 | R00 | ACF06 | 099 |  |  |  |  |  |  |  | 328 | 956 |  |  |
| T20R126005C0 |  | PT-20 ; 2nd Fix, Wiring for Power/Lighting/Emergency (Royal PAT RM) | 42d | 2012-05-21 | 2012-07-10 | T20R109205C0 |  |  |  |  | 122.15d | 0d | ELECTRICAL [392.4 h]; Cost |  |  | T20R126005C0 |  |  | PT | C | 20 | R1 | ME | 260 | 05 |  |  |  |  |  |  | BILL 10 | B10 | S2 | 2F | R00 | ACF07 | 260 |  | MEP |  |  |  | 2n |  |  |  |  |  |
| T20R126007C0 |  | PT-20 ; 2nd Fix, Cable Pulling (Royal PAT RM) | 48d | 2012-05-21 | 2012-07-17 | T20R109201C0 SS+6d, T20R109205C0 |  |  |  |  | 156.65d | 141d | ELECTRICAL [2683.2 h]; Cost |  |  | T20R126007C0 |  |  | PT | C | 20 | R1 | ME | 260 | 07 |  |  |  |  |  |  | BILL 10 | B10 | S2 | 2F | R00 | ACF07 | 260 |  | MEP |  |  |  | 2n |  |  |  |  |  |
| T20R126011C0 |  | PT-20 ; 2nd Fix, Inst of Equipment (DB) (Royal PAT RM) | 54d | 2012-05-21 | 2012-07-24 | T20R109205C0 |  |  |  |  | 132.65d | 84d | ELECTRICAL [878.4 h]; Cost |  |  | T20R126011C0 |  |  | PT | C | 20 | R1 | ME | 260 | 11 |  |  |  |  |  |  | BILL 10 | B10 | S2 | 2F | R00 | ACF04 | 260 |  | MEP |  |  |  | 2n |  |  |  |  | E |
| T20R126053C0 |  | PT-20 ; 2nd Fix, Wiring / Cabling (Royal PAT RM) | 42d | 2012-05-21 | 2012-07-10 | T20R109203C0, T20R109205C0 |  |  |  |  | 45.65d | 30d | ELECTRICAL [392.4 h]; Cost |  |  | T20R126053C0 |  |  | PT | C | 20 | R1 | ME | 260 | 53 |  |  |  |  |  |  | BILL 10 | B10 | S2 | 2F | R00 | ACF07 | 260 |  | MEP |  |  |  | 2n |  | 389 | 977 |  |  |
| T20R109305C0 |  | PT-20 ; Ceramic floor tile (Royal PAT RM) | 29d | 2012-06-04 | 2012-07-09 | T20R107103C0 |  |  |  |  | 127.65d | 0d | CERAMIC FLOOR TILES [208 h]; CERAMIC FLOOR TILES [113 m2]; Cost |  |  | T20R109305C0 |  |  | PT | C | 20 | R1 | FF | 093 | 05 |  |  |  |  |  |  | BILL 10 | B10 | S2 | 02 | R00 | ACF06 | CT |  |  |  |  |  |  |  | 106 | 1000 |  |  |
| T20R105501C0 |  | PT-20 ; Handrails & balustrade (Royal PAT RM) | 33.25d | 2012-07-03 | 2012-08-11 | T20R109901C0 |  |  |  |  | 72.4d | 56.75d | SECONDARY STEEL [198 h]; Cost |  |  | T20R105501C0 |  |  | PT | C | 20 | R1 | SW | 055 | 01 |  |  |  |  |  |  | BILL 10 | B10 | S2 | 01 | R00 | ACF03 | a |  |  |  |  |  |  |  |  |  |  |  |
| T20R109501C0 |  | PT-20 ; Ceiling Grid and Service Tile (Royal PAT RM) | 36d | 2012-07-03 | 2012-08-14 | T20R105503C0, T20R109205C0, T20R121117C0, T20R123008C0, T20R123009C0, T20R123015C0, T20R127001C0, T20R126053C0 FF, T20R109901C0 |  |  |  |  | 15.65d | 0d | CEILING GRID FOR GYPSUM [4154.11 h]; CEILING GRID FOR GYPSUM [355.36 m2]; Cost |  |  | T20R109501C0 |  |  | PT | C | 20 | R1 | CE | 095 | 01 |  |  |  |  |  |  | BILL 10 | B10 | S2 | 01 | R00 | ACF06 | 095 |  |  |  |  |  |  |  | 323 | 952 |  |  |
| T20R122025C0 |  | PT-20 ; Final Fix, Inst of Sanitary Ware (Royal PAT RM) | 42d | 2012-07-09 | 2012-08-29 | T20R109205C0, T20R109305C0 |  |  |  |  | 127.65d | 0d | PLUMBING [3690 h]; Cost |  |  | T20R122025C0 |  |  | PT | C | 20 | R1 | ME | 220 | 25 |  |  |  |  |  |  | BILL 10 | B10 | S2 | FF | R00 | ACF07 | 220 |  | MEP |  |  |  | FF |  |  |  |  |  |
| T20R126015C0 |  | PT-20 ; Final Fix, Termination & Gladding of Cables (Royal PAT RM) | 36d | 2012-07-10 | 2012-08-23 | T20R126005C0 |  |  |  |  | 122.15d | 78d | ELECTRICAL [148.8 h]; Cost |  |  | T20R126015C0 |  |  | PT | C | 20 | R1 | ME | 260 | 15 |  |  |  |  |  |  | BILL 10 | B10 | S2 | FF | R00 | ACF07 | 260 |  | MEP |  |  |  | FF |  |  |  |  |  |
| T20R109601C0 |  | PT-20 ; Flooring (Rubber & etc) (Royal PAT RM) | 54d | 2012-08-14 | 2012-10-18 | T20R109501C0, T20R105501C0 FF |  |  |  |  | 15.65d | 0d | RUBBER FLOOR [40 h]; RUBBER FLOOR [85 m2]; Cost |  |  | T20R109601C0 |  |  | PT | C | 20 | R1 | FF | 096 | 01 |  |  |  |  |  |  | BILL 10 | B10 | S2 | 03 | R00 | ACF06 | RF |  |  |  |  |  |  |  | 326 | 955 |  |  |
| T20R109602C0 |  | PT-20 ; Flooring (Stone) (Royal PAT RM) | 54d | 2012-08-14 | 2012-10-18 | T20R109501C0 |  |  |  |  | 15.65d | 0d | STONE FLOOR [120 m2]; STONE FLOOR [108 h]; Cost |  |  | T20R109601C0 |  |  | PT | C | 20 | R1 | FF | 096 | 01 |  |  |  |  |  |  | BILL 10 | B10 | S2 | 09 | R00 | ACF06 | ST |  |  |  |  |  |  |  | 326 | 955 |  |  |
| T20R109905C0 |  | PT-20 ; Ceiling Prime & 1st coat (Royal PAT RM) | 36d | 2012-08-14 | 2012-09-27 | T20R109501C0 |  |  |  |  | 120.65d | 0d | CEILING PAINT [31 h]; CEILING PAINT [37 m2]; Cost |  |  | T20R109905C0 |  |  | PT | C | 20 | R1 | PA | 099 | 05 |  |  |  |  |  |  | BILL 10 | B10 | S2 | 01 | R00 | ACF06 | 099 |  |  |  |  |  |  |  | 330 | 958 |  |  |
| T20R121115C0 |  | PT-20 ; 2nd Fix, Inst of Sprinkler droppers (Royal PAT RM) | 42d | 2012-08-14 | 2012-10-04 | T20R109501C0 |  |  |  |  | 50.15d | 0d | MECHANICAL [1602 h]; Cost |  |  | T20R121115C0 |  |  | PT | C | 20 | R1 | ME | 211 | 15 |  |  |  |  |  |  | BILL 10 | B10 | S2 | 2F | R00 | ACF07 | 211 |  | MEP |  |  |  | 2n |  |  |  |  |  |
| T20R123021C0 |  | PT-20 ; 2nd Fix, Inst of Flexible Duct & Plenum boxes (Royal PAT RM) | 42d | 2012-08-14 | 2012-10-04 | T20R109205C0, T20R109501C0 |  |  |  |  | 50.15d | 0d | MECHANICAL [30 h]; Cost |  |  | T20R123021C0 |  |  | PT | C | 20 | R1 | ME | 230 | 21 |  |  |  |  |  |  | BILL 10 | B10 | S2 | 2F | R00 | ACF07 | 230 |  | MEP |  |  |  | 2n |  |  |  |  |  |
| T20R126017C0 |  | PT-20 ; Final Fix, Inst of Ceiling rose (Royal PAT RM) | 36d | 2012-08-14 | 2012-09-27 | T20R109501C0 |  |  |  |  | 44.15d | 0d | ELECTRICAL [61.2 h]; Cost |  |  | T20R126017C0 |  |  | PT | C | 20 | R1 | ME | 260 | 17 |  |  |  |  |  |  | BILL 10 | B10 | S2 | FF | R00 | ACF07 | 260 |  | MEP |  |  |  | FF |  |  |  |  |  |
| T20R127002C0 |  | PT-20 ; 2nd Fix, Wiring Droppers (Royal PAT RM) | 42d | 2012-08-14 | 2012-10-04 | T20R109501C0 |  |  |  |  | 44.15d | 0d | ELECTRICAL [392.4 h]; Cost |  |  | T20R127002C0 |  |  | PT | C | 20 | R1 | ME | 270 | 02 |  |  |  |  |  |  | BILL 10 | B10 | S2 | 2F | R00 | ACF07 | 270 |  | MEP |  |  |  | 2n |  |  |  |  |  |
| T20R127020C0 |  | PT-20 ; 2nd Fix, Inst of ELV Equipment (Panels) (Royal PAT RM) | 66d | 2012-08-14 | 2012-11-04 | T20R109205C0, T20R109501C0 |  |  |  |  | 48.65d | 0d | ELECTRICAL [1819.2 h]; Cost |  |  | T20R127020C0 |  |  | PT | C | 20 | R1 | ME | 270 | 20 |  |  |  |  |  |  | BILL 10 | B10 | S2 | 2F | R00 | ACF04 | 270 |  | MEP |  |  |  | 2n |  |  |  |  | E |
| T20R140303C0 |  | PT-20 ; Final Fix, Pneumatic Station (Royal PAT RM) | 36d | 2012-08-14 | 2012-09-27 | T20R109501C0 |  |  |  |  | 144.65d | 129d | MECHANICAL [2974.8 h]; Cost |  |  | T20R140303C0 |  |  | PT | C | 20 | R1 | ME | 403 | 03 |  |  |  |  |  |  | BILL 10 | B10 | S2 | FF | R00 | ACF07 | 403 |  | MEP |  |  |  | FF |  |  |  |  |  |
| T20R122021C0 |  | PT-20 ; Final Fix, Terminate Sanitary Ware & Appliances (Royal PAT RM) | 42d | 2012-08-29 | 2012-10-17 | T20R122011C0, T20R122025C0 |  |  |  |  | 127.65d | 112d | PLUMBING [3361.2 h]; Cost |  |  | T20R122021C0 |  |  | PT | C | 20 | R1 | ME | 220 | 21 |  |  |  |  |  |  | BILL 10 | B10 | S2 | FF | R00 | ACF07 | 220 |  | MEP |  |  |  | FF |  |  |  |  |  |
| T20R109903C0 |  | PT-20 ; Wall Final Paint (Royal PAT RM) | 36d | 2012-09-27 | 2012-11-11 | T20R109901C0, T20R109905C0, T20R109501C0 |  |  |  |  | 120.65d | 84d | WALL PAINT [228 h]; WALL PAINT [284 m2]; Cost |  |  | T20R109903C0 |  |  | PT | C | 20 | R1 | PA | 099 | 03 |  |  |  |  |  |  | BILL 10 | B10 | S2 | 02 | R00 | ACF06 | 099 |  |  |  |  |  |  |  | 329 | 957 |  |  |
| T20R126003C0 |  | PT-20 ; Final Fix, Inst of Light fittings (Royal PAT RM) | 48d | 2012-09-27 | 2012-11-26 | T20R109501C0, T20R126017C0 |  |  |  |  | 44.15d | 0d | ELECTRICAL [7815.6 h]; Cost |  |  | T20R126003C0 |  |  | PT | C | 20 | R1 | ME | 260 | 03 |  |  |  |  |  |  | BILL 10 | B10 | S2 | FF | R00 | ACF07 | 260 |  | MEP |  |  |  | FF |  |  |  |  |  |
| T20R121113C0 |  | PT-20 ; Final Fix, Inst of Sprinklers head/ Extinguisher (Royal PAT RM) | 36d | 2012-10-04 | 2012-11-19 | T20R109501C0, T20R121115C0 |  |  |  |  | 50.15d | 6d | MECHANICAL [234 h]; Cost |  |  | T20R121113C0 |  |  | PT | C | 20 | R1 | ME | 211 | 13 |  |  |  |  |  |  | BILL 10 | B10 | S2 | FF | R00 | ACF07 | 211 |  | MEP |  |  |  | FF |  |  |  |  |  |
| T20R123019C0 |  | PT-20 ; Final Fix, Inst of Grilles & Diffusers (Royal PAT RM) | 36d | 2012-10-04 | 2012-11-19 | T20R109501C0, T20R123021C0, SV10AF0812R2 FF |  |  |  |  | 50.15d | 6d | MECHANICAL [1498.8 h]; Cost |  |  | T20R123019C0 |  |  | PT | C | 20 | R1 | ME | 230 | 19 |  |  |  |  |  |  | BILL 10 | B10 | S2 | FF | R00 | ACF07 | 230 |  | MEP |  |  |  | FF |  |  |  |  |  |
| T20R127030C0 |  | PT-20 ; Final Fix, Inst of ELV device (Detector/Speaker) (Royal PAT RM) | 42d | 2012-10-04 | 2012-11-26 | T20R109501C0, T20R127002C0 |  |  |  |  | 44.15d | 0d | ELECTRICAL [3571.2 h]; Cost |  |  | T20R127030C0 |  |  | PT | C | 20 | R1 | ME | 270 | 30 |  |  |  |  |  |  | BILL 10 | B10 | S2 | FF | R00 | ACF07 | 270 |  | MEP |  |  |  | FF |  |  |  |  |  |
| T20R106101C0 |  | PT-20 ; Wood / caseworks (Royal PAT RM) | 63d | 2012-10-18 | 2013-01-06 | T20CO04407C0, T20R109501C0, T20R109601C0, T20R109901C0, T20R109602C0, TAFWA00101M0, TZ9GZ06151R2 FF |  |  |  |  | 15.65d | 0d | WOOD WORK/CASEWORK [2215.98 no]; WOOD WORK/CASEWORK [4857 h]; Cost |  |  | T20R106101C0 |  |  | PT | C | 20 | R1 | WO | 061 | 01 |  |  |  |  |  |  | BILL 10 | B10 | S2 | WW | R00 | ACF06 | 061 |  |  |  |  |  |  |  | 332 | 960 |  |  |
| T20R106102C0 |  | PT-20 ; Head/Foot Wall (Royal PAT RM) | 42d | 2012-10-18 | 2012-12-11 | T20CO04407C0, T20R109501C0, TAFWA00101M0, T20R106101C0 SS |  |  |  |  | 66.65d | 0d | WOOD WORK/CASEWORK [325 h]; Cost |  |  | T20R106102C0 |  |  | PT | C | 20 | R1 | WO | 061 | 02 |  |  |  |  |  |  | BILL 10 | B10 | S2 | WW | R00 | ACF06 | 061 |  |  |  |  |  |  |  | 332 | 960 |  |  |
| T20R108107C0 |  | PT-20 ; Doors (Royal PAT RM) | 36d | 2012-10-18 | 2012-12-04 | T20R108103C0 SS, T20R109501C0 SS, T20R109601C0, T20R109901C0 SS, T20R109602C0 SS |  |  |  |  | 102.65d | 0d | ASSORTED DOORS [460 h]; ASSORTED DOORS [46 no]; Cost |  |  | T20R108107C0 |  |  | PT | C | 20 | R1 | DO | 081 | 07 |  |  |  |  |  |  | BILL 10 | B10 | S2 | DR | R00 | ACF06 | 081 |  |  |  |  |  |  |  | 317 | 948 | 08 |  |
| T20R111071C0 |  | PT-20 ; Food Service Equipment (Royal PAT RM) | 60d | 2012-10-18 | 2013-01-02 | T20R109601C0, T20R109602C0 |  |  |  |  | 78.65d | 63d | FF&E [3162 h]; Cost |  |  | T20R111071C0 |  |  | PT | C | 20 | R1 | EQ | 110 | 71 |  |  |  |  |  |  | BILL 10 | B10 | S2 | 06 | R00 | ACF08 | KE |  | FK |  |  |  |  |  | 313 | 944 |  |  |
| T20R108709C0 |  | PT-20 ; Ironmongery (Royal PAT RM) | 26.5d | 2012-10-31 | 2012-12-04 | T20R108107C0 FF |  |  |  |  | 102.65d | 87d | IRONMONGERY [620 h]; IRONMONGERY [62 no]; Cost |  |  | T20R108709C0 |  |  | PT | C | 20 | R1 | DO | 087 | 09 |  |  |  |  |  |  | BILL 10 | B10 | S2 | IM | R00 | ACF06 | 087 |  |  |  |  |  |  |  | 322 | 951 | 08 |  |

| ID | WBS | Activity | Duration | Start | Finish | Predecessors | Complete | Remaining | Planned start | Planned finish | Total float | Free float | Calendar | Resources | Cost | Actual cost | Change Order # | NEW ACTIVITY ID | change id | CCAD BUILDING(SET) | CCAD PHASE(SET) | CCAD FLOOR(SET) | CCAD ZONE(SET) | CCAD WORK(SET) | CCAD SECTION(SET) | CCAD SERIAL No.(SET) | CCAD CBS(SET) | CCAD BILL(SET) | CCAD HANDOVER(SET) | CCAD TAG(SET) | CCAD REV(SET) | CCADACF (SET) | CCAD SSCF | CCAD SUB ZONE MEP(SET) | CCAD CSA | U% | Act Selector % | CCAD DIVISION(SET) | CCAD MEQ |
| --- | --- | --- | --- | --- | --- | --- | --- | --- | --- | --- | --- | --- | --- | --- | --- | --- | --- | --- | --- | --- | --- | --- | --- | --- | --- | --- | --- | --- | --- | --- | --- | --- | --- | --- | --- | --- | --- | --- | --- |
| T20R109701C0 |  | PT-20 ; Wall finishes (ST, WD, WC) (Royal PAT RM) | 54d | 2012-11-04 | 2013-01-09 | T20R126011C0, T20R127020C0, T20R109501C0, T20R109602C0, T20R109601C0 |  |  |  |  | 48.65d | 0d |  | ASSORTED WALL FINISH [371 h]; ASSORTED WALL FINISH [426 m2]; Cost |  |  | 105 | 1002 | T20R109701C0 | PT | C | 20 | R1 | WF | 097 | 01 | BILL 10 | B10 | S2 | 01 | R00 | ACF06 | 097 |  |  |  |  |  |  |
| T20R101006C0 |  | PT-20 ; 2nd, Ceiling Inspection by Consultants (Royal PAT RM) | 4.5d | 2012-11-26 | 2012-12-01 | T20R121115C0, T20R123009C0, T20R123015C0, T20R127002C0, T20R109501C0, T20R121113C0, T20R123019C0, T20R126017C0, T20R126015C0, T20R126003C0, T20R127030C0 |  |  |  |  | 44.15d | 28.5d |  | Labor General [1.2 h]; Cost |  |  |  |  | T20R101006C0 | PT | C | 20 | R1 | ME | 010 | 06 | BILL 10 | B10 | S2 | CI | R00 | ACF07 | 010 | 2n | MEP |  |  |  |  |
| T20R122029C0 |  | PT-20 ; Final Fix, Medical Gas pipe (Royal PAT RM) | 18d | 2012-12-11 | 2013-01-02 | T20R109501C0, T20R106102C0 |  |  |  |  | 66.65d | 51d |  | PLUMBING [1149.6 h]; Cost |  |  |  |  | T20R122029C0 | PT | C | 20 | R1 | ME | 220 | 29 | BILL 10 | B10 | S2 | FF | R00 | ACF07 | 220 | FF | MEP |  |  |  |  |
| T20R109503C0 |  | PT-20 ; Ceiling closure - ACT/Gypsum (Royal PAT RM) | 30d | 2013-01-06 | 2013-02-11 | T20R101006C0, T20R121115C0, T20R126005C0, T20R127001C0, T20R127002C0, TAFOA09513C1 FF, T20R106101C0, T20R109602C0, T20R123021C0, T20R126007C0 |  |  |  |  | 15.65d | 0d |  | ASSORTED CEILING FINISH [468.63 h]; CEILING GYPSUM [116.64 h]; ASSORTED CEILING FINISH [762 m2]; CEILING GYPSUM [355 m2]; Cost |  |  | 324 | 953 | T20R109503C0 | PT | C | 20 | R1 | CE | 095 | 03 | BILL 10 | B10 | S2 | 02 | R00 | ACF06 | 095 |  |  |  |  |  |  |
| T20R111001C0 |  | PT-20 ; Wall Protection (WP, CG, WG, FCG) (Royal PAT RM) | 24d | 2013-01-09 | 2013-02-07 | T20R109701C0, T20R109903C0 SS |  |  |  |  | 48.65d | 33d |  | FF&E [18 h]; Cost |  |  | 326 | 1001 | T20R111001C0 | PT | C | 20 | R1 | WF | 110 | 01 | BILL 10 | B10 | S2 | 03 | R00 | ACF08 | b |  |  |  |  |  |  |
| T20P109679C1 |  | PT-20, Carpet Tile Finish (Royal Patient Room-1) | 0d | 2013-02-11 | 2013-02-11 | T20R109907C0 SS, T20R109903C0 SS |  |  |  |  | 45.65d | 30d |  | Cost |  |  |  |  |  | PT | C | 20 | P1 | FF | 096 |  |  | B10 |  |  | R00 | ACF06 | CPT |  | CPT |  |  |  |  |
| T20R109907C0 |  | PT-20 ; Ceiling Final paint (Royal PAT RM) | 18d | 2013-02-11 | 2013-03-04 | T20R109601C0, T20R109905C0, T20R109602C0, T20R109503C0 |  |  |  |  | 27.65d | 0d |  | CEILING PAINT [17 h]; CEILING PAINT [20 m2]; Cost |  |  | 331 | 959 | T20R109907C0 | PT | C | 20 | R1 | PA | 099 | 07 | BILL 10 | B10 | S2 | 02 | R00 | ACF06 | 099 |  |  |  |  |  |  |
| T20R111003C0 |  | PT-20 ; FF & E (Royal PAT RM) | 18d | 2013-02-11 | 2013-03-04 | T20R106101C0, T20R109503C0 |  |  |  |  | 27.65d | 12d |  | FF&E [731 h]; Cost |  |  | 333 | 961 | T20R111003C0 | PT | C | 20 | R1 | WO | 110 | 03 | BILL 10 | B10 | S2 | 04 | R00 | ACF08 | a |  |  |  |  |  |  |
| T20R122027C0 |  | PT-20 ; Final Fix, Inst of All drain (Royal PAT RM) | 18d | 2013-02-11 | 2013-03-04 | T20R109305C0, T20R109503C0, TZ9GZ22056R2 FF |  |  |  |  | 15.65d | 0d |  | PLUMBING [1378.8 h]; Cost |  |  |  |  | T20R122027C0 | PT | C | 20 | R1 | ME | 220 | 27 | BILL 10 | B10 | S2 | FF | R00 | ACF07 | 220 | FF | MEP |  |  |  |  |
| T20R126019C0 |  | PT-20 ; Final Fix, Inst of Switch/Sockets (Royal PAT RM) | 18d | 2013-02-11 | 2013-03-04 | T20R109901C0, T20R109503C0, TZ9GZ27058R2 FF, TV09GZ27060R2 FF, TV09GZ27061R2 FF, UV10AF26007R2 FF |  |  |  |  | 15.65d | 0d |  | ELECTRICAL [362.4 h]; Cost |  |  |  |  | T20R126019C0 | PT | C | 20 | R1 | ME | 260 | 19 | BILL 10 | B10 | S2 | FF | R00 | ACF07 | 260 | FF | MEP |  |  |  |  |
|  | 10 | **Precommissioning Tesing & snagging (PAT RM-1)** |  | 2013-03-04 | 2013-04-15 |  |  |  |  |  |  |  |  |  |  |  |  |  |  |  |  |  |  |  |  |  |  |  |  |  |  |  |  |  |  |  |  |  |  |
| T20TS01801C0 |  | PT-20 ; MEP de-snag, FIREM sign-off | 12d | 2013-03-04 | 2013-03-18 | T20R122025C0, T20R122027C0, T20R122021C0, T20R140303C0, T20R122029C0, T20R126019C0 |  |  |  |  | 15.65d | 0d |  | TESTING & COMMISSIONING [2040 h]; Cost |  |  |  |  | T20TS01801C0 | PT | C | 20 | TS | SC | 018 | 01 | BILL 10 | B10 | S2 | 01 | R00 | ACF07 | 018 |  |  |  |  |  |  |
| T20TS01806C0 |  | PT-20 ; Touch-up & Clean / JV inspection /CIR /De-snag | 18d | 2013-03-18 | 2013-04-08 | T20R105501C0, T20R106101C0, T20R106102C0, T20R108709C0, T20R109305C0, T20R109601C0, T20R109701C0, T20R109903C0, T20R109907C0, T20R111001C0, T20R111003C0, T20R111071C0, T20TS01801C0, T20R109602C0, T20R109503C0, T20P109679C1, T20P209689C1 |  |  |  |  | 15.65d | 0d |  | TESTING & COMMISSIONING [128 h]; Cost |  |  |  |  | T20TS01802C0 | PT | C | 20 | TS | SC | 018 | 02 | BILL 10 | B10 | S2 | 02 | R00 | ACF07 | 018 |  |  |  |  |  |  |
| T20TS01809C0 |  | PT-20 ; Consultant's final de-snag inspection | 7d | 2013-04-08 | 2013-04-15 | T20TS01806C0, T20TS01811C0 |  |  |  |  | 18.65d | 0d | R00-C02, Calendar day | Labor General [1 h]; Cost |  |  |  |  | T20TS01803C0 | PT | C | 20 | TS | SC | 018 | 03 | BILL 10 | B10 | S2 | 03 | R00 | ACF07 | 018 |  |  |  |  |  |  |
|  | 03 | **Royal PAT RM-2** |  | 2011-09-05 | 2013-04-15 |  |  |  |  |  |  |  |  |  |  |  |  |  |  |  |  |  |  |  |  |  |  |  |  |  |  |  |  |  |  |  |  |  |  |
| T20R222019C0 |  | PT-20 ; 1st Fix, Inst of Drainage pipe (ceiling) (Royal PAT RM-2) | 48d | 2011-09-05 A | 2012-02-16 | T20R223001C0, T20R226013C0 SS+9d | 5% | 45.6d | 2012-01-03 | 2012-02-28 | 37.56d | 0d |  | PLUMBING [1225.2 h]; Cost [74493.8 AED] | 74,493.83 | 3,724.69 |  |  | T20R222019C0 | PT | C | 20 | R2 | ME | 220 | 19 | BILL 10 | B10 | S2 | 1F | R00 | ACF04 | 220 | 1S | MEP | 0 | M1F |  |  |
| T20R223001C0 |  | PT-20 ; 1st Fix, Inst. of Supports for MEP (Royal PAT RM-2) | 36d | 2011-09-05 A | 2011-11-30 | T20CO07807C0 | 5% | 34.2d | 2011-10-15 | 2011-11-29 | 34.81d | 0d |  | MECHANICAL [800.4 h]; Cost [45150.4 AED] | 45,150.38 | 2,257.52 |  |  | T20R223001C0 | PT | C | 20 | R2 | ME | 230 | 01 | BILL 10 | B10 | S2 | 1F | R00 | ACF04 | 230 | 1S | MEP |  | M1F |  |  |
| T20R226001C0 |  | PT-20 ; 1st Fix, Inst of Trunking/Conduiting (Royal PAT RM-2) | 48d | 2011-09-05 A | 2012-01-25 | T20CO07807C0, T20R223001C0 | 5% | 45.6d | 2011-11-30 | 2012-01-26 | 37.56d | 0d |  | ELECTRICAL [652.8 h]; Cost [37790.1 AED] | 37,790.1 | 1,889.5 |  |  | T20R226001C0 | PT | C | 20 | R2 | ME | 260 | 01 | BILL 10 | B10 | S2 | 1F | R00 | ACF04 | 260 | 1S | MEP |  | M1F |  |  |
| T20R227010C0 |  | PT-20 ; 1st Fix, Inst of Trunking for ELV system (Royal PAT RM-2) | 48d | 2011-11-30 | 2012-01-28 | T20CO07807C0, T20R223001C0, T20R226001C0 SS+9d |  |  |  |  | 37.56d | 0d |  | ELECTRICAL [1164 h]; Cost |  |  |  |  | T20R227010C0 | PT | C | 20 | R2 | ME | 270 | 10 | BILL 10 | B10 | S2 | 1F | R00 | ACF04 | 270 | 1S | MEP |  | M1F |  |  |
| T20R226013C0 |  | PT-20 ; 1st Fix, Inst of Cable Tray (Royal PAT RM-2) | 48d | 2011-12-12 | 2012-02-08 | T20CO07807C0, T20R223001C0, T20R227010C0 SS+9d |  |  |  |  | 37.56d | 0d |  | ELECTRICAL [355.2 h]; Cost |  |  |  |  | T20R226013C0 | PT | C | 20 | R2 | ME | 260 | 13 | BILL 10 | B10 | S2 | 1F | R00 | ACF04 | 260 | 1S | MEP |  | M1F |  |  |
| T20R222005C0 |  | PT-20 ; 1st Fix, Inst of Water supply pipe (ceiling) (Royal PAT RM-2) | 60d | 2011-12-22 | 2012-03-04 | T20R222019C0 SS+9d, T20R223001C0 |  |  |  |  | 37.56d | 0d |  | PLUMBING [4042.8 h]; Cost |  |  |  |  | T20R222005C0 | PT | C | 20 | R2 | ME | 220 | 05 | BILL 10 | B10 | S2 | 1F | R00 | ACF04 | 220 | 1S | MEP |  | M1F |  |  |
| T20R209201C0 |  | PT-20 ; Metal Studs (Royal PAT RM-2) | 42d | 2011-12-24 | 2012-02-13 | T20R223001C0, T20CO04407C0 FF, T20CO04405C0 FF |  |  |  |  | 15.65d | 0d |  | PARTITIONS [3204 h]; PARTITIONS - Metal Studs [445 m]; Cost |  |  | 313 | 944 | T20R209201C0 | PT | C | 20 | R2 | PT | 092 | 01 | BILL 10 | B10 | S2 | 1F | R00 | ACF06 | 092 |  | GP |  | PMS |  |  |
| T20R221111C0 |  | PT-20 ; 1st Fix, Inst of Sprinkler main pipe (Royal PAT RM-2) | 48d | 2012-01-03 | 2012-02-29 | T20R222005C0 SS+9d, T20R223001C0 |  |  |  |  | 37.56d | 0d |  | MECHANICAL [656.4 h]; Cost |  |  |  |  | T20R221111C0 | PT | C | 20 | R2 | ME | 211 | 11 | BILL 10 | B10 | S2 | 1F | R00 | ACF04 | 211 | 1S | MEP |  | M1F |  |  |
| T20R222007C0 |  | PT-20 ; 1st Fix, Inst of Medical Gas pipe (Royal PAT RM-2) | 48d | 2012-01-14 | 2012-03-11 | T20R221111C0 SS+9d, T20R223001C0 |  |  |  |  | 40.81d | 25.16d |  | PLUMBING [958.8 h]; Cost |  |  |  |  | T20R222007C0 | PT | C | 20 | R2 | ME | 220 | 07 | BILL 10 | B10 | S2 | 1F | R00 | ACF04 | 220 | 1S | MEP |  | M1F |  |  |
| T20R223017C0 |  | PT-20 ; 1st Fix, Inst of CHW pipe (Royal PAT RM-2) | 54d | 2012-01-29 | 2012-04-02 | T20R221111C0 SS+14d, T20R223001C0, T20R205503C0 FF+18d |  |  |  |  | 29.4d | 0d |  | MECHANICAL [2467.2 h]; Cost |  |  |  |  | T20R223017C0 | PT | C | 20 | R2 | ME | 230 | 17 | BILL 10 | B10 | S2 | 1F | R00 | ACF04 | 230 | 1S | MEP |  | M1F |  |  |
| T20R227001C0 |  | PT-20 ; 1st Fix, Wiring/ Cabling work (Royal PAT RM-2) | 48d | 2012-02-08 | 2012-04-04 | T20R226001C0, T20R226013C0, T20R227010C0 |  |  |  |  | 91.56d | 75.91d |  | ELECTRICAL [392.4 h]; Cost |  |  |  |  | T20R227001C0 | PT | C | 20 | R2 | ME | 270 | 01 | BILL 10 | B10 | S2 | 1F | R00 | ACF04 | 270 | 1S | MEP |  | M1F |  |  |
| T20R223023C0 |  | PT-20 ; 1st Fix, Inst of Main Ducting (Royal PAT RM-2) | 60d | 2012-02-11 | 2012-04-21 | T20R223001C0, T20R223017C0 SS+10d |  |  |  |  | 29.4d | 0d |  | MECHANICAL [8022 h]; Cost |  |  |  |  | T20R223023C0 | PT | C | 20 | R2 | ME | 230 | 23 | BILL 10 | B10 | S2 | 1F | R00 | ACF04 | 230 | 1S | MEP |  | M1F |  |  |
| T20R205503C0 |  | PT-20 ; Ceiling Support for medical equipment (Royal PAT RM-2) | 24d | 2012-02-13 | 2012-03-12 | T20R209201C0, TAFCI22001R20 FS+72d |  |  |  |  | 29.4d | 0d |  | SECONDARY STEEL [70 h]; STRUCTURAL STEEL [5 T(Fe)]; Cost |  |  | 335 | 962 | D03EY05503C0 | PT | C | 20 | R2 | SW | 055 | 03 | BILL 10 | B10 | S2 | 03 | R00 | ACF03 | b |  |  |  |  |  |  |
| T20R205511C0 |  | PT-20 ; Wall reinforcement for MEP/Medical (Royal PAT RM-2) | 24d | 2012-02-13 | 2012-03-12 | T20R209201C0, TAFCI22001R02 FS+72d |  |  |  |  | 39.52d | 23.88d |  | SECONDARY STEEL [30 h]; Cost |  |  |  |  | T20R205511C0 | PT | C | 20 | R2 | SW | 055 | 11 | BILL 10 | B10 | S2 | 03 | R00 | ACF03 | b |  |  |  |  |  |  |
| T20R209203C0 |  | PT-20 ; Partitions 1st face (Royal PAT RM-2) | 36d | 2012-02-13 | 2012-03-26 | T20R209201C0 |  |  |  |  | 27.52d | 11.88d |  | PARTITIONS [445 m]; PARTITIONS [2498 h]; Cost |  |  | 314 | 945 | T20R209203C0 | PT | C | 20 | R2 | PT | 092 | 03 | BILL 10 | B10 | S2 | 2F | R00 | ACF06 | 092 |  | GP |  | P1F |  |  |
| T20R222011C0 |  | PT-20 ; 2nd Fix, Drainage/Water pipe (wall) (Royal PAT RM-2) | 42d | 2012-02-13 | 2012-04-02 | T20R209201C0 |  |  |  |  | 15.65d | 0d |  | PLUMBING [1378.8 h]; Cost |  |  |  |  | T20R222011C0 | PT | C | 20 | R2 | ME | 220 | 11 | BILL 10 | B10 | S2 | 2F | R00 | ACF07 | 220 | 2n | MEP |  |  |  |  |
| T20R222015C0 |  | PT-20 ; 2nd Fix, Medical Gas pipe (Royal PAT RM-2) | 42d | 2012-02-13 | 2012-04-02 | T20R209201C0, T20R222007C0 SS |  |  |  |  | 15.65d | 0d |  | PLUMBING [1149.6 h]; Cost |  |  |  |  | T20R222015C0 | PT | C | 20 | R2 | ME | 220 | 15 | BILL 10 | B10 | S2 | 2F | R00 | ACF07 | 220 | 2n | MEP |  |  |  |  |
| T20R226009C0 |  | PT-20 ; 2nd Fix, Inst of Wall conduites (Royal PAT RM-2) | 42d | 2012-02-13 | 2012-04-02 | T20R209201C0 |  |  |  |  | 15.65d | 0d |  | ELECTRICAL [734.4 h]; Cost |  |  |  |  | T20R226009C0 | PT | C | 20 | R2 | ME | 260 | 09 | BILL 10 | B10 | S2 | 2F | R00 | ACF07 | 260 | 2n | MEP |  |  |  |  |
| T20R221117C0 |  | PT-20 ; 1st Fix, Inst of Sprinkler branch pipe (Royal PAT RM-2) | 48d | 2012-02-29 | 2012-04-25 | T20R209201C0, T20R221111C0, T20R205503C0 FF+18d |  |  |  |  | 73.56d | 57.91d |  | MECHANICAL [561.6 h]; Cost |  |  |  |  | T20R221117C0 | PT | C | 20 | R2 | ME | 211 | 17 | BILL 10 | B10 | S2 | 1F | R00 | ACF04 | 211 | 1S | MEP |  | M1F |  |  |
| T20R208103C0 |  | PT-20 ; Door Frames (Royal PAT RM-2) | 36d | 2012-03-05 | 2012-04-16 | T20R209201C0 SS+14d, GNHE08101C0 FS+126d, T20R108103C0 SS+3d |  |  |  |  | 45.4d | 0d |  | ASSORTED DOORS [286 h]; Cost |  |  | 316 | 947 | T20R208103C0 | PT | C | 20 | R2 | DO | 081 | 03 | BILL 10 | B10 | S2 | DF | R00 | ACF06 | 081 |  |  |  |  | 08 |  |
| T20R201005C0 |  | PT-20 ; 2nd, Wall Inspection by Consultant (Royal PAT RM-2) | 5.88d | 2012-04-02 | 2012-04-09 | T20R222011C0, T20R222015C0, T20R226009C0 |  |  |  |  | 15.65d | 0d |  | Labor General [1.2 h]; Cost |  |  |  |  | T20R201005C0 | PT | C | 20 | R2 | ME | 010 | 05 | BILL 10 | B10 | S2 | WI | R00 | ACF07 | 010 | 2n | MEP |  |  |  |  |
| T20R223009C0 |  | PT-20 ; 2nd Fix, Inst of VAV'S CHW connection (Royal PAT RM-2) | 42d | 2012-04-02 | 2012-05-21 | T20R223017C0 |  |  |  |  | 45.4d | 16d |  | MECHANICAL [1450.8 h]; Cost |  |  |  |  | T20R223009C0 | PT | C | 20 | R2 | ME | 230 | 09 | BILL 10 | B10 | S2 | 2F | R00 | ACF07 | 230 | 2n | MEP |  |  |  |  |
| T20R209205C0 |  | PT-20 ; Partitions Closing (Royal PAT RM-2) | 35.88d | 2012-04-09 | 2012-05-21 | T20R201005C0, T20R205511C0, T20R209203C0, T20R222005C0, T20R222019C0, TAFOA09214C1 FF, T20R208103C0 FF |  |  |  |  | 15.65d | 0d |  | PARTITIONS [445 m]; PARTITIONS [3201 h]; Cost |  |  | 315 | 946 | T20R209205C0 | PT | C | 20 | R2 | PT | 092 | 05 | BILL 10 | B10 | S2 | FF | R00 | ACF06 | 092 |  | GP |  | P2F |  |  |
| T20R223008C0 |  | PT-20 ; 1st Fix, Inst of VCD's/FD's (Royal PAT RM-2) | 48d | 2012-04-21 | 2012-06-17 | T20R223023C0, T20R205503C0 FF+18d |  |  |  |  | 29.4d | 13.75d |  | MECHANICAL [1753.2 h]; Cost |  |  |  |  | T20R223008C0 | PT | C | 20 | R2 | ME | 230 | 08 | BILL 10 | B10 | S2 | 1F | R00 | ACF04 | 230 | 1S | MEP |  | M1F |  |  |
| T20R223015C0 |  | PT-20 ; 2nd Fix, Insulation of CHW pipe & Duct (Royal PAT RM-2) | 48d | 2012-04-21 | 2012-06-17 | T20R223009C0 SS, T20R223017C0, T20R223023C0 |  |  |  |  | 29.4d | 13.75d |  | MECHANICAL [3064.8 h]; Cost |  |  |  |  | T20R223015C0 | PT | C | 20 | R2 | ME | 230 | 15 | BILL 10 | B10 | S2 | 2F | R00 | ACF07 | 230 | 2n | MEP |  |  |  |  |
| T20R207103C0 |  | PT-20 ; Waterproofing (Royal PAT RM-2) | 12d | 2012-05-21 | 2012-06-04 | T20R208103C0, T20R209205C0 |  |  |  |  | 127.65d | 0d |  | THERMAL & MOISTURE [408 h]; THERMAL & MOISTURE [2711 m2]; Cost |  |  | 105 | 999 | T20R207103C0 | PT | C | 20 | R2 | FF | 071 | 03 | BILL 10 | B10 | S2 | 01 | R00 | ACF03 | 071 |  |  |  |  |  |  |
| T20R209901C0 |  | PT-20 ; Wall Prime & 1st coat (Royal PAT RM-2) | 36d | 2012-05-21 | 2012-07-03 | T20R209205C0 |  |  |  |  | 15.65d | 0d |  | WALL PAINT [534 h]; WALL PAINT [666 m2]; Cost |  |  | 328 | 956 | T20R209901C0 | PT | C | 20 | R2 | PA | 099 | 01 | BILL 10 | B10 | S2 | 01 | R00 | ACF06 | 099 |  |  |  |  |  |  |
| T20R226005C0 |  | PT-20 ; 2nd Fix, Wiring for Power/Lighting/Emergency (Royal PAT RM-2) | 42d | 2012-05-21 | 2012-07-10 | T20R209205C0 |  |  |  |  | 122.15d | 0d |  | ELECTRICAL [392.4 h]; Cost |  |  |  |  | T20R226005C0 | PT | C | 20 | R2 | ME | 260 | 05 | BILL 10 | B10 | S2 | 2F | R00 | ACF07 | 260 | 2n | MEP |  |  |  |  |
| T20R226007C0 |  | PT-20 ; 2nd Fix, Cable Pulling (Royal PAT RM-2) | 48d | 2012-05-21 | 2012-07-17 | T20R209201C0 SS+6d, T20R209205C0 |  |  |  |  | 156.65d | 141d |  | ELECTRICAL [2683.2 h]; Cost |  |  |  |  | T20R226007C0 | PT | C | 20 | R2 | ME | 260 | 07 | BILL 10 | B10 | S2 | 2F | R00 | ACF07 | 260 | 2n | MEP |  |  |  |  |
| T20R226011C0 |  | PT-20 ; 2nd Fix, Inst of Equipment (DB) (Royal PAT RM-2) | 54d | 2012-05-21 | 2012-07-24 | T20R209205C0 |  |  |  |  | 132.65d | 84d |  | ELECTRICAL [878.4 h]; Cost |  |  |  |  | T20R226011C0 | PT | C | 20 | R2 | ME | 260 | 11 | BILL 10 | B10 | S2 | 2F | R00 | ACF04 | 260 | 2n | MEP |  |  |  | E |
| T20R226053C0 |  | PT-20 ; 2nd Fix, Wiring / Cabling (Royal PAT RM-2) | 42d | 2012-05-21 | 2012-07-10 | T20R209203C0, T20R209205C0 |  |  |  |  | 45.65d | 30d |  | ELECTRICAL [392.4 h]; Cost |  |  | 389 | 977 | T20R226053C0 | PT | C | 20 | R2 | ME | 260 | 53 | BILL 10 | B10 | S2 | 2F | R00 | ACF07 | 260 | 2n | MEP |  |  |  |  |
| T20R209305C0 |  | PT-20 ; Ceramic floor tile (Royal PAT RM-2) | 29d | 2012-06-04 | 2012-07-09 | T20R207103C0 |  |  |  |  | 127.65d | 0d |  | CERAMIC FLOOR TILES [200 h]; CERAMIC FLOOR TILES [108 m2]; Cost |  |  | 106 | 1000 | T20R209305C0 | PT | C | 20 | R2 | FF | 093 | 05 | BILL 10 | B10 | S2 | 02 | R00 | ACF06 | CT |  |  |  |  |  |  |
| T20R205501C0 |  | PT-20 ; Handrails & balustrade (Royal PAT RM-2) | 33.25d | 2012-07-03 | 2012-08-11 | T20R209901C0, TZ9GZ05150R2 FF |  |  |  |  | 72.4d | 56.75d |  | SECONDARY STEEL [188 h]; Cost |  |  |  |  | T20R205501C0 | PT | C | 20 | R2 | SW | 055 | 01 | BILL 10 | B10 | S2 | 01 | R00 | ACF03 | a |  |  |  |  |  |  |
| T20R209501C0 |  | PT-20 ; Ceiling Grid and Service Tile (Royal PAT RM-2) | 36d | 2012-07-03 | 2012-08-14 | T20R205503C0, T20R209205C0 SS+15d, T20R221117C0, T20R223008C0, T20R223009C0, T20R223015C0, T20R227001C0, T20R226053C0 FF, T20R209901C0 |  |  |  |  | 15.65d | 0d |  | CEILING GRID FOR GYPSUM [3959.31 h]; CEILING GRID FOR GYPSUM [338.7 m2]; Cost |  |  | 323 | 952 | T20R209501C0 | PT | C | 20 | R2 | CE | 095 | 01 | BILL 10 | B10 | S2 | 01 | R00 | ACF06 | 095 |  |  |  |  |  |  |
| T20R222025C0 |  | PT-20 ; Final Fix, Inst of Sanitary Ware (Royal PAT RM-2) | 42d | 2012-07-09 | 2012-08-29 | T20R209205C0, T20R209305C0 |  |  |  |  | 127.65d | 0d |  | PLUMBING [3361.2 h]; Cost |  |  |  |  | T20R222025C0 | PT | C | 20 | R2 | ME | 220 | 25 | BILL 10 | B10 | S2 | FF | R00 | ACF07 | 220 | FF | MEP |  |  |  |  |
| T20R226015C0 |  | PT-20 ; Final Fix, Termination & Gladding of Cables (Royal PAT RM-2) | 36d | 2012-07-10 | 2012-08-23 | T20R226005C0 |  |  |  |  | 122.15d | 78d |  | ELECTRICAL [148.8 h]; Cost |  |  |  |  | T20R226015C0 | PT | C | 20 | R2 | ME | 260 | 15 | BILL 10 | B10 | S2 | FF | R00 | ACF07 | 260 | FF | MEP |  |  |  |  |
| T20R209601C0 |  | PT-20 ; Flooring (Rubber & etc) (Royal PAT RM-2) | 54d | 2012-08-14 | 2012-10-18 | T20R209501C0, T20R205501C0 FF |  |  |  |  | 15.65d | 0d |  | RUBBER FLOOR [40 h]; RUBBER FLOOR [85 m2]; Cost |  |  | 326 | 955 | T20R209601C0 | PT | C | 20 | R2 | FF | 096 | 01 | BILL 10 | B10 | S2 | 03 | R00 | ACF06 | RF |  |  |  |  |  |  |
| T20R209602C0 |  | PT-20 ; Flooring (Stone) (Royal PAT RM-2) | 54d | 2012-08-14 | 2012-10-18 | T20R209501C0 |  |  |  |  | 15.65d | 0d |  | STONE FLOOR [120 m2]; STONE FLOOR [108 h]; Cost |  |  | 326 | 955 | T20R209601C0 | PT | C | 20 | R2 | FF | 096 | 01 | BILL 10 | B10 | S2 | 09 | R00 | ACF06 | ST |  |  |  |  |  |  |
| T20R209905C0 |  | PT-20 ; Ceiling Prime & 1st coat (Royal PAT RM-2) | 36d | 2012-08-14 | 2012-09-27 | T20R209501C0 |  |  |  |  | 120.65d | 0d |  | CEILING PAINT [29 h]; CEILING PAINT [35 m2]; Cost |  |  | 330 | 958 | T20R209905C0 | PT | C | 20 | R2 | PA | 099 | 05 | BILL 10 | B10 | S2 | 01 | R00 | ACF06 | 099 |  |  |  |  |  |  |
| T20R221115C0 |  | PT-20 ; 2nd Fix, Inst of Sprinkler droppers (Royal PAT RM-2) | 42d | 2012-08-14 | 2012-10-04 | T20R209501C0 |  |  |  |  | 50.15d | 0d |  | MECHANICAL [1602 h]; Cost |  |  |  |  | T20R221115C0 | PT | C | 20 | R2 | ME | 211 | 15 | BILL 10 | B10 | S2 | 2F | R00 | ACF07 | 211 | 2n | MEP |  |  |  |  |
| T20R223021C0 |  | PT-20 ; 2nd Fix, Inst of Flexible Duct & Plenum boxes (Royal PAT RM-2) | 42d | 2012-08-14 | 2012-10-04 | T20R209205C0, T20R209501C0 |  |  |  |  | 50.15d | 0d |  | MECHANICAL [30 h]; Cost |  |  |  |  | T20R223021C0 | PT | C | 20 | R2 | ME | 230 | 21 | BILL 10 | B10 | S2 | 2F | R00 | ACF07 | 230 | 2n | MEP |  |  |  |  |
| T20R226017C0 |  | PT-20 ; Final Fix, Inst of Ceiling rose (Royal PAT RM-2) | 36d | 2012-08-14 | 2012-09-27 | T20R209501C0 |  |  |  |  | 44.15d | 0d |  | ELECTRICAL [61.2 h]; Cost |  |  |  |  | T20R226017C0 | PT | C | 20 | R2 | ME | 260 | 17 | BILL 10 | B10 | S2 | FF | R00 | ACF07 | 260 | FF | MEP |  |  |  |  |
| T20R227002C0 |  | PT-20 ; 2nd Fix, Wiring Droppers (Royal PAT RM-2) | 42d | 2012-08-14 | 2012-10-04 | T20R209501C0 |  |  |  |  | 44.15d | 0d |  | ELECTRICAL [392.4 h]; Cost |  |  |  |  | T20R227002C0 | PT | C | 20 | R2 | ME | 270 | 02 | BILL 10 | B10 | S2 | 2F | R00 | ACF07 | 270 | 2n | MEP |  |  |  |  |
| T20R227020C0 |  | PT-20 ; 2nd Fix, Inst of ELV Equipment (Panels) (Royal PAT RM-2) | 66d | 2012-08-14 | 2012-11-04 | T20R209205C0, T20R209501C0 |  |  |  |  | 48.65d | 0d |  | ELECTRICAL [1819.2 h]; Cost |  |  |  |  | T20R227020C0 | PT | C | 20 | R2 | ME | 270 | 20 | BILL 10 | B10 | S2 | 2F | R00 | ACF04 | 270 | 2n | MEP |  |  |  | E |
| T20R240303C0 |  | PT-20 ; Final Fix, Pneumatic Station (Royal PAT RM-2) | 36d | 2012-08-14 | 2012-09-27 | T20R209501C0 |  |  |  |  | 144.65d | 129d |  | MECHANICAL [2974.8 h]; Cost |  |  |  |  | T20R240303C0 | PT | C | 20 | R2 | ME | 403 | 03 | BILL 10 | B10 | S2 | FF | R00 | ACF07 | 403 | FF | MEP |  |  |  |  |
| T20R222021C0 |  | PT-20 ; Final Fix, Terminate Sanitary Ware & Appliances (Royal PAT RM-2) | 42d | 2012-08-29 | 2012-10-17 | T20R222011C0, T20R222025C0 |  |  |  |  | 127.65d | 112d |  | PLUMBING [3361.2 h]; Cost |  |  |  |  | T20R222021C0 | PT | C | 20 | R2 | ME | 220 | 21 | BILL 10 | B10 | S2 | FF | R00 | ACF07 | 220 | FF | MEP |  |  |  |  |
| T20R209903C0 |  | PT-20 ; Wall Final Paint (Royal PAT RM-2) | 36d | 2012-09-27 | 2012-11-11 | T20R209901C0, T20R209905C0, T20R209501C0 |  |  |  |  | 120.65d | 84d |  | WALL PAINT [289 h]; WALL PAINT [359 m2]; Cost |  |  | 329 | 957 | T20R209903C0 | PT | C | 20 | R2 | PA | 099 | 03 | BILL 10 | B10 | S2 | 02 | R00 | ACF06 | 099 |  |  |  |  |  |  |
| T20R226003C0 |  | PT-20 ; Final Fix, Inst of Light fittings (Royal PAT RM-2) | 48d | 2012-09-27 | 2012-11-26 | T20R209501C0, T20R226017C0 |  |  |  |  | 44.15d | 0d |  | ELECTRICAL [7815.6 h]; Cost |  |  |  |  | T20R226003C0 | PT | C | 20 | R2 | ME | 260 | 03 | BILL 10 | B10 | S2 | FF | R00 | ACF07 | 260 | FF | MEP |  |  |  |  |
| T20R221113C0 |  | PT-20 ; Final Fix, Inst of Sprinklers head/ Extinguisher (Royal PAT RM-2) | 36d | 2012-10-04 | 2012-11-19 | T20R209501C0, T20R221115C0 |  |  |  |  | 50.15d | 6d |  | MECHANICAL [234 h]; Cost |  |  |  |  | T20R221113C0 | PT | C | 20 | R2 | ME | 211 | 13 | BILL 10 | B10 | S2 | FF | R00 | ACF07 | 211 | FF | MEP |  |  |  |  |
| T20R223019C0 |  | PT-20 ; Final Fix, Inst of Grilles & Diffusers (Royal PAT RM-2) | 36d | 2012-10-04 | 2012-11-19 | T20R209501C0, T20R223021C0 |  |  |  |  | 50.15d | 6d |  | MECHANICAL [1498.8 h]; Cost |  |  |  |  | T20R223019C0 | PT | C | 20 | R2 | ME | 230 | 19 | BILL 10 | B10 | S2 | FF | R00 | ACF07 | 230 | FF | MEP |  |  |  |  |
| T20R227030C0 |  | PT-20 ; Final Fix, Inst of ELV device (Detector/Speaker) (Royal PAT RM-2) | 42d | 2012-10-04 | 2012-11-26 | T20R209501C0, T20R227002C0 |  |  |  |  | 44.15d | 0d |  | ELECTRICAL [3571.2 h]; Cost |  |  |  |  | T20R227030C0 | PT | C | 20 | R2 | ME | 270 | 30 | BILL 10 | B10 | S2 | FF | R00 | ACF07 | 270 | FF | MEP |  |  |  |  |
| T20R206101C0 |  | PT-20 ; Wood / caseworks (Royal PAT RM-2) | 63d | 2012-10-18 | 2013-01-06 | T20CO04407C0, T20R209501C0, T20R209601C0, T20R209901C0, T20R209602C0, TAFWA00101M0 |  |  |  |  | 15.65d | 0d |  | WOOD WORK/CASEWORK [2120.57 no]; WOOD WORK/CASEWORK [4648 h]; Cost |  |  | 332 | 960 | T20R206101C0 | PT | C | 20 | R2 | WO | 061 | 01 | BILL 10 | B10 | S2 | WW | R00 | ACF06 | 061 |  |  |  |  |  |  |
| T20R206102C0 |  | PT-20 ; Head/Foot Wall (Royal PAT RM-2) | 54d | 2012-10-18 | 2012-12-25 | T20CO04407C0, T20R209501C0, TAFWA00101M0, T20R206101C0 SS |  |  |  |  | 54.65d | 0d |  | WOOD WORK/CASEWORK [325 h]; Cost |  |  | 332 | 960 | T20R206102C0 | PT | C | 20 | R2 | WO | 061 | 02 | BILL 10 | B10 | S2 | WW | R00 | ACF06 | 061 |  |  |  |  |  |  |
| T20R208107C0 |  | PT-20 ; Doors (Royal PAT RM-2) | 36d | 2012-10-18 | 2012-12-04 | T20R208103C0, T20R209501C0, T20R209601C0, T20R209901C0, T20R209602C0 |  |  |  |  | 76.15d | 0d |  | ASSORTED DOORS [580 h]; ASSORTED DOORS [58 no]; Cost |  |  | 317 | 948 | T20R208107C0 | PT | C | 20 | R2 | DO | 081 | 07 | BILL 10 | B10 | S2 | DR | R00 | ACF06 | 081 |  |  |  |  | 08 |  |
| T20R211071C0 |  | PT-20 ; Food Service Equipment (Royal PAT RM-2) | 60d | 2012-10-18 | 2013-01-02 | T20R209601C0, T20R209602C0 |  |  |  |  | 78.65d | 63d |  | FF&E [3026 h]; Cost |  |  | 313 | 944 | T20R211071C0 | PT | C | 20 | R2 | EQ | 110 | 71 | BILL 10 | B10 | S2 | 06 | R00 | ACF08 | KE |  | FK |  |  |  |  |

| ID | WBS | Activity | Duration | Start | Finish | Predecessors | Complete | Remaining | Planned start | Planned finish | Total float | Free float | Calendar | Resources | Cost | Actual cost | Change Order # | NEW ACTIVITY ID | change id | CCAD BUILDING(SET) | CCAD PHASE(SET) | CCAD FLOOR(SET) | CCAD ZONE(SET) | CCAD WORK(SET) | CCAD SECTION(SET) | CCAD SERIAL No.(SET) | CCAD CBS(SET) | CCAD BILL(SET) | CCAD HANDOVER(SET) | CCAD TAG(SET) | CCAD REV(SET) | CCADACF (SET) | CCAD SSCF | CCAD SUB ZONE MEP(SET) | CCAD CSA | CCAD DIVISION(SET) | Act Selector % | U% | CCAD MEQ | R3 Finish |
| --- | --- | --- | --- | --- | --- | --- | --- | --- | --- | --- | --- | --- | --- | --- | --- | --- | --- | --- | --- | --- | --- | --- | --- | --- | --- | --- | --- | --- | --- | --- | --- | --- | --- | --- | --- | --- | --- | --- | --- | --- |
| T20R209701C0 |  | PT-20 ; Wall finishes (ST, WD, WC) (Royal PAT RM-2) | 54d | 2012-11-04 | 2013-01-09 | T20R226011C0, T20R227020C0, T20R209501C0, T20R209601C0, T20R209601C0 FF, T20R209602C0 |  |  |  |  | 48.65d | 0d |  | ASSORTED WALL FINISH [470 h]; ASSORTED WALL FINISH [539 m2]; Cost |  |  | 105 | 1002 | T20R209701C0 | PT | C | 20 | R2 | WF | 097 | 01 | BILL 10 | B10 | S2 | 01 | R00 | ACF06 | 097 |  |  |  |  |  |  |  |
| T20R201006C0 |  | PT-20 ; 2nd, Ceiling Inspection by Consultants (Royal PAT RM-2) | 4.5d | 2012-11-26 | 2012-12-01 | T20R221115C0, T20R223009C0, T20R223015C0, T20R227002C0, T20R209501C0, T20R221113C0, T20R223019C0, T20R226015C0, T20R226017C0, T20R226003C0, T20R227030C0 |  |  |  |  | 44.15d | 28.5d |  | Labor General [1.2 h]; Cost |  |  |  |  | T20R201006C0 | PT | C | 20 | R2 | ME | 010 | 06 | BILL 10 | B10 | S2 | CI | R00 | ACF07 | 010 | 2n | MEP |  |  |  |  |  |
| T20R208709C0 |  | PT-20 ; Ironmongery (Royal PAT RM-2) | 26.5d | 2012-12-04 | 2013-01-05 | T20R208107C0 |  |  |  |  | 76.15d | 60.5d |  | IRONMONGERY [790 h]; IRONMONGERY [79 no]; Cost |  |  | 322 | 951 | T20R208709C0 | PT | C | 20 | R2 | DO | 087 | 09 | BILL 10 | B10 | S2 | IM | R00 | ACF06 | 087 |  |  | 08 |  |  |  |  |
| T20R222029C0 |  | PT-20 ; Final Fix, Medical Gas pipe (Royal PAT RM-2) | 18d | 2012-12-25 | 2013-01-16 | T20R209501C0, T20R206102C0 |  |  |  |  | 54.65d | 39d |  | PLUMBING [1149.6 h]; Cost |  |  |  |  | T20R222029C0 | PT | C | 20 | R2 | ME | 220 | 29 | BILL 10 | B10 | S2 | FF | R00 | ACF07 | 220 | FF | MEP |  |  |  |  |  |
| T20R209503C0 |  | PT-20 ; Ceiling closure - ACT/Gypsum (Royal PAT RM-2) | 30d | 2013-01-06 | 2013-02-11 | T20R201006C0, T20R221115C0, T20R226005C0, T20R227001C0, T20R227002C0, TAFOA09513C1 FF, T20R206101C0, T20R209601C0, T20R223021C0, T20R226007C0 |  |  |  |  | 15.65d | 0d |  | ASSORTED CEILING FINISH [447.11 h]; CEILING GYPSUM [111.11 h]; ASSORTED CEILING FINISH [727 m2]; CEILING GYPSUM [339 m2]; Cost |  |  | 324 | 953 | T20R209503C0 | PT | C | 20 | R2 | CE | 095 | 03 | BILL 10 | B10 | S2 | 02 | R00 | ACF06 | 095 |  |  |  |  |  |  |  |
| T20R211001C0 |  | PT-20 ; Wall Protection (WP, CG, WG, FCG) (Royal PAT RM-2) | 24d | 2013-01-09 | 2013-02-07 | T20R209701C0, T20R209903C0 SS |  |  |  |  | 48.65d | 33d |  | FF&E [23 h]; Cost |  |  | 326 | 1001 | T20R211001C0 | PT | C | 20 | R2 | WF | 110 | 01 | BILL 10 | B10 | S2 | 03 | R00 | ACF08 | b |  |  |  |  |  |  |  |
| T20P209689C1 |  | PT-20, Carpet Tile Finish (Royal Patient Room-2) | 0d | 2013-02-11 | 2013-02-11 | T20R209903C0 SS, T20R209907C0 SS |  |  |  |  | 45.65d | 30d |  | Cost |  |  |  |  |  | PT | C | 20 | P2 | FF | 096 |  |  | B10 |  |  | R00 | ACF06 | CPT |  | CPT |  |  |  |  |  |
| T20R209907C0 |  | PT-20 ; Ceiling Final paint (Royal PAT RM-2) | 18d | 2013-02-11 | 2013-03-04 | T20R209601C0, T20R209905C0, T20R209602C0, T20R209503C0 |  |  |  |  | 27.65d | 0d |  | CEILING PAINT [17 h]; CEILING PAINT [19 m2]; Cost |  |  | 331 | 959 | T20R209907C0 | PT | C | 20 | R2 | PA | 099 | 07 | BILL 10 | B10 | S2 | 02 | R00 | ACF06 | 099 |  |  |  |  |  |  |  |
| T20R211003C0 |  | PT-20 ; FF & E (Royal PAT RM-2) | 18d | 2013-02-11 | 2013-03-04 | T20R206101C0, T20R209503C0 |  |  |  |  | 27.65d | 12d |  | FF&E [942 h]; Cost |  |  | 333 | 961 | T20R211003C0 | PT | C | 20 | R2 | WO | 110 | 03 | BILL 10 | B10 | S2 | 04 | R00 | ACF08 | a |  |  |  |  |  |  |  |
| T20R222027C0 |  | PT-20 ; Final Fix, Inst of All drain (Royal PAT RM-2) | 18d | 2013-02-11 | 2013-03-04 | T20R209305C0, T20R209503C0 |  |  |  |  | 15.65d | 0d |  | PLUMBING [1378.8 h]; Cost |  |  |  |  | T20R222027C0 | PT | C | 20 | R2 | ME | 220 | 27 | BILL 10 | B10 | S2 | FF | R00 | ACF07 | 220 | FF | MEP |  |  |  |  |  |
| T20R226019C0 |  | PT-20 ; Final Fix, Inst of Switch/Sockets (Royal PAT RM-2) | 18d | 2013-02-11 | 2013-03-04 | T20R209901C0, T20R209503C0 |  |  |  |  | 15.65d | 0d |  | ELECTRICAL [362.4 h]; Cost |  |  |  |  | T20R226019C0 | PT | C | 20 | R2 | ME | 260 | 19 | BILL 10 | B10 | S2 | FF | R00 | ACF07 | 260 | FF | MEP |  |  |  |  |  |
|  | 10 | **Precommissioning Tesing & snagging (PAT RM-2)** |  | 2013-03-04 | 2013-04-15 |  |  |  |  |  |  |  |  |  |  |  |  |  |  |  |  |  |  |  |  |  |  |  |  |  |  |  |  |  |  |  |  |  |  |  |
| T20TS01804C0 |  | PT-20 ; MEP de-snag, FIREM sign-off | 12d | 2013-03-04 | 2013-03-18 | T20R222025C0, T20R222027C0, T20R226015C0, T20R222021C0, T20R221113C0, T20R223019C0, T20R240303C0, T20R222029C0, T20R226017C0, T20R226003C0, T20R227030C0, T20R226019C0 |  |  |  |  | 15.65d | 0d |  | TESTING & COMMISSIONING [510 h]; Cost |  |  |  |  | T20TS01801C0 | PT | C | 20 | TS | SC | 018 | 01 | BILL 10 | B10 | S2 | 01 | R00 | ACF07 | 018 |  |  |  |  |  |  |  |
| T20TS01807C0 |  | PT-20 ; Touch-up & Clean / JV inspection /CIR /De-snag | 18d | 2013-03-18 | 2013-04-08 | T20R205501C0, T20R206101C0, T20R206102C0, T20R208709C0, T20R209305C0, T20R209601C0, T20R209701C0, T20R209903C0, T20R209907C0, T20R211001C0, T20R211003C0, T20R211071C0, T20TS01804C0, T20R209602C0, T20R209503C0 |  |  |  |  | 15.65d | 0d |  | TESTING & COMMISSIONING [128 h]; Cost |  |  |  |  | T20TS01802C0 | PT | C | 20 | TS | SC | 018 | 02 | BILL 10 | B10 | S2 | 02 | R00 | ACF07 | 018 |  |  |  |  |  |  |  |
| T20TS01810C0 |  | PT-20 ; Consultant's final de-snag inspection | 7d | 2013-04-08 | 2013-04-15 | T20TS01807C0 |  |  |  |  | 18.65d | 0d | R00-C02, Calendar day | Labor General [1 h]; Cost |  |  |  |  | T20TS01803C0 | PT | C | 20 | TS | SC | 018 | 03 | BILL 10 | B10 | S2 | 03 | R00 | ACF07 | 018 |  |  |  |  |  |  |  |
|  | 04 | **Public Area ( Elev.Lobby & Corridors )** |  | 2011-09-05 | 2013-03-23 |  |  |  |  |  |  |  |  |  |  |  |  |  |  |  |  |  |  |  |  |  |  |  |  |  |  |  |  |  |  |  |  |  |  |  |
| T20PA23001C0 |  | PT-20 ; 1st Fix, Inst. of Supports for MEP (Public Area) | 36d | 2011-09-05 A | 2011-11-28 | T20CO07807C0 | 10% | 32.4d | 2011-10-15 | 2011-11-29 | 29.49d | 0d |  | MECHANICAL [4027.2 h]; Cost [45150.4 AED] | 45,150.38 | 4,515.04 |  |  | S08PA23001C0 | PT | C | 20 | PA | ME | 230 | 01 | BILL 10 | B10 | S2 | 1F | R00 | ACF04 | 230 | 1S | MEP |  | M1F |  |  |  |
| T20PA26001C0 |  | PT-20 ; 1st Fix, Inst of Trunking/Conduiting (Public Area) | 60d | 2011-09-05 A | 2012-02-06 | T20CO07807C0, T20PA23001C0 | 5% | 57d | 2011-11-30 | 2012-02-11 | 29.49d | 0d |  | ELECTRICAL [4268.4 h]; Cost [37790.1 AED] | 37,790.1 | 1,889.5 |  |  | S08PA26001C0 | PT | C | 20 | PA | ME | 260 | 01 | BILL 10 | B10 | S2 | 1F | R00 | ACF04 | 260 | 1S | MEP |  | M1F |  |  |  |
| T20PA09201C0 |  | PT-20 ; Metal Studs (Public Area) | 29.88d | 2011-10-19 | 2011-11-28 | T20PA23001C0 SS+12d, T20PA23001C0 FF |  |  |  |  | 70.49d | 0d |  | PARTITIONS [5514 h]; PARTITIONS - Metal Studs [765 m]; Cost |  |  | 313 | 944 | S08PA09201C0 | PT | C | 20 | PA | PT | 092 | 01 | BILL 10 | B10 | S2 | 1F | R00 | ACF06 | 092 |  | GP |  | PMS |  |  |  |
| T20PA09203C0 |  | PT-20 ; Partitions early wall & 1st face (Public Area) | 27d | 2011-11-28 | 2011-12-31 | T20PA09201C0 |  |  |  |  | 91.49d | 62d |  | PARTITIONS [765 m]; PARTITIONS [4303 h]; Cost |  |  | 314 | 945 | S08PA09203C0 | PT | C | 20 | PA | PT | 092 | 03 | BILL 10 | B10 | S2 | 2F | R00 | ACF06 | 092 |  | GP |  | P1F |  |  |  |
| T20PA22011C0 |  | PT-20 ; 2nd Fix, Drainage/Water pipe (wall) (Public Area) | 42d | 2011-11-28 | 2012-01-18 | T20PA09201C0 |  |  |  |  | 70.49d | 0d |  | PLUMBING [1378.8 h]; Cost |  |  |  |  | S08PA22011C0 | PT | C | 20 | PA | ME | 220 | 11 | BILL 10 | B10 | S2 | 2F | R00 | ACF07 | 220 | 2n | MEP |  |  |  |  |  |
| T20PA26009C0 |  | PT-20 ; 2nd Fix, Inst of Wall conduites (Public Area) | 42d | 2011-11-28 | 2012-01-18 | T20PA09201C0 |  |  |  |  | 70.49d | 0d |  | ELECTRICAL [734.4 h]; Cost |  |  |  |  | S08PA26009C0 | PT | C | 20 | PA | ME | 260 | 09 | BILL 10 | B10 | S2 | 2F | R00 | ACF07 | 260 | 2n | MEP |  |  |  |  |  |
| T20PA27010C0 |  | PT-20 ; 1st Fix, Inst of Trunking for ELV system (Public Area) | 54d | 2011-11-28 | 2012-02-01 | T20CO07807C0, T20PA23001C0, T20PA26001C0 SS+14d |  |  |  |  | 29.49d | 0d |  | ELECTRICAL [3202.8 h]; Cost |  |  |  |  | S08PA27010C0 | PT | C | 20 | PA | ME | 270 | 10 | BILL 10 | B10 | S2 | 1F | R00 | ACF04 | 270 | 1S | MEP |  | M1F |  |  |  |
| T20PA26013C0 |  | PT-20 ; 1st Fix, Inst of Cable Tray (Public Area) | 48d | 2011-12-11 | 2012-02-07 | T20CO07807C0, T20PA23001C0, T20PA27010C0 SS+10d |  |  |  |  | 29.49d | 0d |  | ELECTRICAL [399.6 h]; Cost |  |  |  |  | S08PA26013C0 | PT | C | 20 | PA | ME | 260 | 13 | BILL 10 | B10 | S2 | 1F | R00 | ACF04 | 260 | 1S | MEP |  | M1F |  |  |  |
| T20PA22019C0 |  | PT-20 ; 1st Fix, Inst of Drainage pipe (ceiling) (Public Area) | 48d | 2011-12-21 | 2012-02-18 | T20PA23001C0, T20PA26013C0 SS+9d |  |  |  |  | 29.49d | 0d |  | PLUMBING [1378.8 h]; Cost |  |  |  |  | S08PA22019C0 | PT | C | 20 | PA | ME | 220 | 19 | BILL 10 | B10 | S2 | 1F | R00 | ACF04 | 220 | 1S | MEP |  | M1F | 0 |  |  |
| T20PA22005C0 |  | PT-20 ; 1st Fix, Inst of Water supply pipe (ceiling) (Public Area) | 60d | 2012-01-03 | 2012-03-14 | T20PA22019C0 SS+10d, T20PA23001C0 |  |  |  |  | 29.49d | 0d |  | PLUMBING [4548 h]; Cost |  |  |  |  | S08PA22005C0 | PT | C | 20 | PA | ME | 220 | 05 | BILL 10 | B10 | S2 | 1F | R00 | ACF04 | 220 | 1S | MEP |  | M1F |  |  |  |
| T20PA21111C0 |  | PT-20 ; 1st Fix, Inst of Sprinkler main pipe (Public Area) | 48d | 2012-01-14 | 2012-03-11 | T20PA22005C0 SS+9d, T20PA23001C0 |  |  |  |  | 38.11d | 0d |  | MECHANICAL [1236 h]; Cost |  |  |  |  | S08PA21111C0 | PT | C | 20 | PA | ME | 211 | 11 | BILL 10 | B10 | S2 | 1F | R00 | ACF04 | 211 | 1S | MEP |  | M1F |  |  |  |
| T20PA01005C0 |  | PT-20 ; 2nd, Wall Inspection by Consultant (Public Area) | 6d | 2012-01-18 | 2012-01-25 | T20PA22011C0, T20PA26009C0 |  |  |  |  | 70.49d | 41d |  | Labor General [1.2 h]; Cost |  |  |  |  | S08PA01005C0 | PT | C | 20 | PA | ME | 010 | 05 | BILL 10 | B10 | S2 | WI | R00 | ACF07 | 010 | 2n | MEP |  |  |  |  |  |
| T20PA23017C0 |  | PT-20 ; 1st Fix, Inst of CHW pipe (Public Area) | 54d | 2012-01-24 | 2012-03-28 | T20PA21111C0 SS+9d, T20PA23001C0 |  |  |  |  | 38.11d | 0d |  | MECHANICAL [2467.2 h]; Cost |  |  |  |  | S08PA23017C0 | PT | C | 20 | PA | ME | 230 | 17 | BILL 10 | B10 | S2 | 1F | R00 | ACF04 | 230 | 1S | MEP |  | M1F |  |  |  |
| T20PA23023C0 |  | PT-20 ; 1st Fix, Inst of Main Ducting (Public Area) | 60d | 2012-02-06 | 2012-04-16 | T20PA23001C0, T20PA23017C0 SS+10d |  |  |  |  | 64.11d | 0d |  | MECHANICAL [8022 h]; Cost |  |  |  |  | S08PA23023C0 | PT | C | 20 | PA | ME | 230 | 23 | BILL 10 | B10 | S2 | 1F | R00 | ACF04 | 230 | 1S | MEP |  | M1F |  |  |  |
| T20PA27001C0 |  | PT-20 ; 1st Fix, Wiring/ Cabling work (Public Area) | 48d | 2012-02-07 | 2012-04-03 | T20PA26001C0, T20PA26013C0, T20PA27010C0 |  |  |  |  | 123.11d | 85d |  | ELECTRICAL [392.4 h]; Cost |  |  |  |  | S08PA27001C0 | PT | C | 20 | PA | ME | 270 | 01 | BILL 10 | B10 | S2 | 1F | R00 | ACF04 | 270 | 1S | MEP |  | M1F |  |  |  |
| T20PA08103C0 |  | PT-20 ; Door Frames (Public Area) | 36d | 2012-02-27 | 2012-04-09 | T20PA09201C0, GNHE08101C0 FS+126d, T19RK08103C0 SS+3d |  |  |  |  | 45.4d | 0d |  | ASSORTED DOORS [441 h]; Cost |  |  | 316 | 947 | S08PA08103C0 | PT | C | 20 | PA | DO | 081 | 03 | BILL 10 | B10 | S2 | DF | R00 | ACF06 | 081 |  |  | 08 |  |  |  |  |
| T20PA21117C0 |  | PT-20 ; 1st Fix, Inst of Sprinkler branch pipe (Public Area) | 48d | 2012-03-11 | 2012-05-06 | T20PA09201C0, T20PA21111C0 |  |  |  |  | 95.11d | 57d |  | MECHANICAL [561.6 h]; Cost |  |  |  |  | S08PA21117C0 | PT | C | 20 | PA | ME | 211 | 17 | BILL 10 | B10 | S2 | 1F | R00 | ACF04 | 211 | 1S | MEP |  | M1F |  |  |  |
| T20PA09205C0 |  | PT-20 ; Partitions Closing (Public Area) | 48d | 2012-03-14 | 2012-05-09 | T20PA01005C0, T20PA09203C0, T20PA22005C0, T20PA22019C0, TAFOA09214C1 FF, T20PA08103C0 FF |  |  |  |  | 29.49d | 0d |  | PARTITIONS [765.13 m]; PARTITIONS [5516 h]; Cost |  |  | 315 | 946 | S08PA09205C0 | PT | C | 20 | PA | PT | 092 | 05 | BILL 10 | B10 | S2 | FF | R00 | ACF06 | 092 |  | GP |  | P2F |  |  |  |
| T20PA23009C0 |  | PT-20 ; 2nd Fix, Inst of VAV'S CHW connection (Public Area) | 42d | 2012-03-28 | 2012-05-16 | T20PA23017C0 |  |  |  |  | 38.11d | 0d |  | MECHANICAL [1450.8 h]; Cost |  |  |  |  | S08PA23009C0 | PT | C | 20 | PA | ME | 230 | 09 | BILL 10 | B10 | S2 | 2F | R00 | ACF07 | 230 | 2n | MEP |  |  |  |  |  |
| T20PA23008C0 |  | PT-20 ; 1st Fix, Inst of VCD's/FD's (Public Area) | 48d | 2012-04-16 | 2012-06-11 | T20PA23023C0 |  |  |  |  | 64.11d | 26d |  | MECHANICAL [1753.2 h]; Cost |  |  |  |  | S08PA23008C0 | PT | C | 20 | PA | ME | 230 | 08 | BILL 10 | B10 | S2 | 1F | R00 | ACF04 | 230 | 1S | MEP |  | M1F |  |  |  |
| T20PA09901C0 |  | PT-20 ; Wall Prime & 1st coat (Public Area) | 36d | 2012-05-09 | 2012-06-21 | T20PA09205C0 |  |  |  |  | 56.11d | 0d |  | WALL PAINT [824 h]; WALL PAINT [1028 m2]; Cost |  |  | 328 | 956 | S08PA09901C0 | PT | C | 20 | PA | PA | 099 | 01 | BILL 10 | B10 | S2 | 01 | R00 | ACF06 | 099 |  |  |  |  |  |  |  |
| T20PA26005C0 |  | PT-20 ; 2nd Fix, Wiring for Power/Lighting/Emergency (Public Area) | 42d | 2012-05-09 | 2012-06-28 | T20PA09205C0 |  |  |  |  | 134.11d | 0d |  | ELECTRICAL [392.4 h]; Cost |  |  |  |  | S08PA26005C0 | PT | C | 20 | PA | ME | 260 | 05 | BILL 10 | B10 | S2 | 2F | R00 | ACF07 | 260 | 2n | MEP |  |  |  |  |  |
| T20PA26007C0 |  | PT-20 ; 2nd Fix, Cable Pulling (Public Area) | 48d | 2012-05-09 | 2012-07-05 | T20PA09205C0 |  |  |  |  | 168.61d | 130.5d |  | ELECTRICAL [2683.2 h]; Cost |  |  |  |  | S08PA26007C0 | PT | C | 20 | PA | ME | 260 | 07 | BILL 10 | B10 | S2 | 2F | R00 | ACF07 | 260 | 2n | MEP |  |  |  |  |  |
| T20PA26011C0 |  | PT-20 ; 2nd Fix, Inst of Equipment (DB) (Public Area) | 54d | 2012-05-09 | 2012-07-12 | T20PA09205C0 |  |  |  |  | 142.36d | 102d |  | ELECTRICAL [878.4 h]; Cost |  |  |  |  | S08PA26011C0 | PT | C | 20 | PA | ME | 260 | 11 | BILL 10 | B10 | S2 | 2F | R00 | ACF04 | 260 | 2n | MEP |  |  |  | E |  |
| T20PA26053C0 |  | PT-20 ; 2nd Fix, Wiring / Cabling (Public Area) | 42d | 2012-05-09 | 2012-06-28 | T20PA09203C0, T20PA09205C0 |  |  |  |  | 86.11d | 48d |  | ELECTRICAL [392.4 h]; Cost |  |  | 389 | 977 | S08PA26053C0 | PT | C | 20 | PA | ME | 260 | 53 | BILL 10 | B10 | S2 | 2F | R00 | ACF07 | 260 | 2n | MEP |  |  |  |  |  |
| T20PA23015C0 |  | PT-20 ; 2nd Fix, Insulation of CHW pipe & Duct (Public Area) | 48d | 2012-05-16 | 2012-07-12 | T20PA23009C0, T20PA23017C0, T20PA23023C0 |  |  |  |  | 38.11d | 0d |  | MECHANICAL [3064.8 h]; Cost |  |  |  |  | S08PA23015C0 | PT | C | 20 | PA | ME | 230 | 15 | BILL 10 | B10 | S2 | 2F | R00 | ACF07 | 230 | 2n | MEP |  |  |  |  |  |
| T20PA05501C0 |  | PT-20 ; Handrails & balustrade (Public Area) | 36d | 2012-06-21 | 2012-08-02 | T20PA09901C0, TAFT105509C0, TAFT805509C0 |  |  |  |  | 124.36d | 72d |  | SECONDARY STEEL [349 h]; Cost |  |  |  |  | S08PA05501C0 | PT | C | 20 | PA | SW | 055 | 01 | BILL 10 | B10 | S2 | 01 | R00 | ACF03 | a |  |  |  |  |  |  |  |
| T20PA26015C0 |  | PT-20 ; Final Fix, Termination & Gladding of Cables (Public Area) | 36d | 2012-06-28 | 2012-08-09 | T20PA26005C0 |  |  |  |  | 134.11d | 96d |  | ELECTRICAL [148.8 h]; Cost |  |  |  |  | S08PA26015C0 | PT | C | 20 | PA | ME | 260 | 15 | BILL 10 | B10 | S2 | FF | R00 | ACF07 | 260 | FF | MEP |  |  |  |  |  |
| T20PA09501C0 |  | PT-20 ; Ceiling Grid and Service Tile (Public Area) | 36d | 2012-07-12 | 2012-08-26 | T20PA09205C0 SS+15d, T20PA21117C0, T20PA23008C0, T20PA23009C0, T20PA23015C0, T20PA27001C0, TAFCI22002R02 FS+72d, T20PA26053C0 FF, T20PA09901C0 |  |  |  |  | 38.11d | 0d |  | CEILING GRID FOR GYPSUM [7348.83 h]; CEILING GRID FOR GYPSUM [628.82 m2]; Cost |  |  | 323 | 952 | S08PA09501C0 | PT | C | 20 | PA | CE | 095 | 01 | BILL 10 | B10 | S2 | 01 | R00 | ACF06 | 095 |  |  |  |  |  |  |  |
| T20PA09601C0 |  | PT-20 ; Flooring (Rubber & etc) (Public Area) | 54d | 2012-08-26 | 2012-10-30 | TAFCI22002R02 FS+72d, T20PA09501C0, T20PA05501C0 FF |  |  |  |  | 52.36d | 0d |  | RUBBER FLOOR [72 h]; RUBBER FLOOR [170 m2]; Cost |  |  | 326 | 955 | S08PA09601C0 | PT | C | 20 | PA | FF | 096 | 01 | BILL 10 | B10 | S2 | 03 | R00 | ACF06 | RF |  |  |  |  |  |  | R3 |
| T20PA09602C0 |  | PT-20 ; Flooring (Stone) (Public Area) | 54d | 2012-08-26 | 2012-10-30 | TAFCI22002R02 FS+72d, T20PA09501C0 |  |  |  |  | 52.36d | 0d |  | STONE FLOOR [36 h]; STONE FLOOR [36 m2]; Cost |  |  | 326 | 955 | S08PA09601C0 | PT | C | 20 | PA | FF | 096 | 01 | BILL 10 | B10 | S2 | 09 | R00 | ACF06 | ST |  |  |  |  |  |  | R3 |
| T20PA09905C0 |  | PT-20 ; Ceiling Prime & 1st coat (Public Area) | 36d | 2012-08-26 | 2012-10-07 | T20PA09501C0 |  |  |  |  | 106.36d | 0d |  | CEILING PAINT [53 h]; CEILING PAINT [65 m2]; Cost |  |  | 330 | 958 | S08PA09905C0 | PT | C | 20 | PA | PA | 099 | 05 | BILL 10 | B10 | S2 | 01 | R00 | ACF06 | 099 |  |  |  |  |  |  |  |
| T20PA21115C0 |  | PT-20 ; 2nd Fix, Inst of Sprinkler droppers (Public Area) | 42d | 2012-08-26 | 2012-10-14 | T20PA09501C0 |  |  |  |  | 44.11d | 0d |  | MECHANICAL [1602 h]; Cost |  |  |  |  | S08PA21115C0 | PT | C | 20 | PA | ME | 211 | 15 | BILL 10 | B10 | S2 | 2F | R00 | ACF07 | 211 | 2n | MEP |  |  |  |  |  |
| T20PA23021C0 |  | PT-20 ; 2nd Fix, Inst of Flexible Duct & Plenum boxes (Public Area) | 42d | 2012-08-26 | 2012-10-14 | T20PA09205C0, T20PA09501C0 |  |  |  |  | 44.11d | 0d |  | MECHANICAL [30 h]; Cost |  |  |  |  | S08PA23021C0 | PT | C | 20 | PA | ME | 230 | 21 | BILL 10 | B10 | S2 | 2F | R00 | ACF07 | 230 | 2n | MEP |  |  |  |  |  |
| T20PA26017C0 |  | PT-20 ; Final Fix, Inst of Ceiling rose (Public Area) | 36d | 2012-08-26 | 2012-10-07 | T20PA09501C0 |  |  |  |  | 38.11d | 0d |  | ELECTRICAL [61.2 h]; Cost |  |  |  |  | S08PA26017C0 | PT | C | 20 | PA | ME | 260 | 17 | BILL 10 | B10 | S2 | FF | R00 | ACF07 | 260 | FF | MEP |  |  |  |  |  |
| T20PA27002C0 |  | PT-20 ; 2nd Fix, Wiring Droppers (Public Area) | 42d | 2012-08-26 | 2012-10-14 | T20PA09501C0 |  |  |  |  | 38.11d | 0d |  | ELECTRICAL [392.4 h]; Cost |  |  |  |  | S08PA27002C0 | PT | C | 20 | PA | ME | 270 | 02 | BILL 10 | B10 | S2 | 2F | R00 | ACF07 | 270 | 2n | MEP |  |  |  |  |  |
| T20PA27020C0 |  | PT-20 ; 2nd Fix, Inst of ELV Equipment (Panels) (Public Area) | 66d | 2012-08-26 | 2012-11-13 | T20PA09205C0, T20PA09501C0 |  |  |  |  | 40.36d | 0d |  | ELECTRICAL [1819.2 h]; Cost |  |  |  |  | S08PA27020C0 | PT | C | 20 | PA | ME | 270 | 20 | BILL 10 | B10 | S2 | 2F | R00 | ACF04 | 270 | 2n | MEP |  |  |  | E |  |
| T20PA09903C0 |  | PT-20 ; Wall Final Paint (Public Area) | 36d | 2012-10-07 | 2012-11-21 | T20PA09901C0, T20PA09905C0, T20PA09501C0 |  |  |  |  | 106.36d | 68.25d |  | WALL PAINT [444 h]; WALL PAINT [553 m2]; Cost |  |  | 329 | 957 | S08PA09903C0 | PT | C | 20 | PA | PA | 099 | 03 | BILL 10 | B10 | S2 | 02 | R00 | ACF06 | 099 |  |  |  |  |  |  |  |
| T20PA26003C0 |  | PT-20 ; Final Fix, Inst of Light fittings (Public Area) | 48d | 2012-10-07 | 2012-12-06 | T20PA09501C0, T20PA26017C0 |  |  |  |  | 38.11d | 0d |  | ELECTRICAL [7815.6 h]; Cost |  |  |  |  | S08PA26003C0 | PT | C | 20 | PA | ME | 260 | 03 | BILL 10 | B10 | S2 | FF | R00 | ACF07 | 260 | FF | MEP |  |  |  |  |  |
| T20PA21113C0 |  | PT-20 ; Final Fix, Inst of Sprinklers head/ Extinguisher (Public Area) | 36d | 2012-10-14 | 2012-11-28 | T20PA09501C0, T20PA21115C0 |  |  |  |  | 44.11d | 6d |  | MECHANICAL [234 h]; Cost |  |  |  |  | S08PA21113C0 | PT | C | 20 | PA | ME | 211 | 13 | BILL 10 | B10 | S2 | FF | R00 | ACF07 | 211 | FF | MEP |  |  |  |  |  |
| T20PA23019C0 |  | PT-20 ; Final Fix, Inst of Grilles & Diffusers (Public Area) | 36d | 2012-10-14 | 2012-11-28 | T20PA09501C0, T20PA23021C0 |  |  |  |  | 44.11d | 6d |  | MECHANICAL [1498.8 h]; Cost |  |  |  |  | S08PA23019C0 | PT | C | 20 | PA | ME | 230 | 19 | BILL 10 | B10 | S2 | FF | R00 | ACF07 | 230 | FF | MEP |  |  |  |  |  |
| T20PA27030C0 |  | PT-20 ; Final Fix, Inst of ELV devise (Detector/Speaker) (Public Area) | 42d | 2012-10-14 | 2012-12-06 | T20PA09501C0, T20PA27002C0 |  |  |  |  | 38.11d | 0d |  | ELECTRICAL [3571.2 h]; Cost |  |  |  |  | S08PA27030C0 | PT | C | 20 | PA | ME | 270 | 30 | BILL 10 | B10 | S2 | FF | R00 | ACF07 | 270 | FF | MEP |  |  |  |  |  |
| T20PA08107C0 |  | PT-20 ; Doors (Public Area) | 36d | 2012-10-30 | 2012-12-13 | T20PA08103C0, T20PA09501C0, T20PA09601C0, T20PA09901C0, T20PA09602C0 |  |  |  |  | 57.11d | 0d |  | ASSORTED DOORS [890 h]; ASSORTED DOORS [89 no]; Cost |  |  | 317 | 948 | S08PA08107C0 | PT | C | 20 | PA | DO | 081 | 07 | BILL 10 | B10 | S2 | DR | R00 | ACF06 | 081 |  |  | 08 |  |  |  |  |
| T20PA09701C0 |  | PT-20 ; Wall finishes (ST, WD, WC) (Public Area) | 54d | 2012-11-13 | 2013-01-19 | T20PA26011C0, T20PA27020C0, TVT3114211C0, TVT3214255C0, TVT3314245C0, T20PA09501C0, T20PA09601C0, T20PA09602C0 |  |  |  |  | 40.36d | 0d |  | ASSORTED WALL FINISH [724 h]; ASSORTED WALL FINISH [832 m2]; Cost |  |  | 105 | 1002 | S08PA09701C0 | PT | C | 20 | PA | WF | 097 | 01 | BILL 10 | B10 | S2 | 01 | R00 | ACF06 | 097 |  |  |  |  |  |  |  |
| T20PA01006C0 |  | PT-20 ; 2nd, Ceiling Inspection by Consultants (Public Area) | 4.5d | 2012-12-06 | 2012-12-12 | T20PA21115C0, T20PA23009C0, T20PA23015C0, T20PA27002C0, T20PA09501C0, T20PA21113C0, T20PA23019C0, T20PA26015C0, T20PA26017C0, T20PA26003C0, T20PA27030C0 |  |  |  |  | 38.11d | 0d |  | Labor General [1.2 h]; Cost |  |  |  |  | S08PA01006C0 | PT | C | 20 | PA | ME | 010 | 06 | BILL 10 | B10 | S2 | CI | R00 | ACF07 | 010 | 2n | MEP |  |  |  |  |  |
| T20PA09503C0 |  | PT-20 ; Ceiling closure - ACT/Gypsum (Public Area) | 21.75d | 2012-12-12 | 2013-01-07 | T20PA01006C0, T20PA21115C0, T20PA26005C0, T20PA27001C0, T20PA27002C0, TAFOA09513C1 FF, T20PA09602C0, AGLCO05501R02 FF, T20PA23021C0, T20PA26007C0, CGLCO05501R02 FF, GGLCO05501R02 FF, IGLCO05501R02 FF, SGLCO05501R02 FF, TGLCO05501R02 FF |  |  |  |  | 38.11d | 0d |  | ASSORTED CEILING FINISH [829.63 h]; CEILING GYPSUM [206.23 h]; ASSORTED CEILING FINISH [1349 m2]; CEILING GYPSUM [629 m2]; Cost |  |  | 324 | 953 | S08PA09503C0 | PT | C | 20 | PA | CE | 095 | 03 | BILL 10 | B10 | S2 | 02 | R00 | ACF06 | 095 |  |  |  |  |  |  |  |
| T20PA08709C0 |  | PT-20 ; Ironmongery (Public Area) | 31.25d | 2012-12-13 | 2013-01-20 | T20PA08107C0, TZ9GZ08152R2 FF |  |  |  |  | 57.11d | 19d |  | IRONMONGERY [1220 h]; IRONMONGERY [122 no]; Cost |  |  | 322 | 951 | S08PA08709C0 | PT | C | 20 | PA | DO | 087 | 09 | BILL 10 | B10 | S2 | IM | R00 | ACF06 | 087 |  |  | 08 |  |  |  |  |
| T20PA09907C0 |  | PT-20 ; Ceiling Final paint (Public Area) | 18d | 2013-01-07 | 2013-01-29 | T20PA09601C0, T20PA09905C0, T20PA09602C0, T20PA09503C0 |  |  |  |  | 50.11d | 12d |  | CEILING PAINT [29 h]; CEILING PAINT [35 m2]; Cost |  |  | 331 | 959 | S08PA09907C0 | PT | C | 20 | PA | PA | 099 | 07 | BILL 10 | B10 | S2 | 02 | R00 | ACF06 | 099 |  |  |  |  |  |  |  |
| T20PA26019C0 |  | PT-20 ; Final Fix, Inst of Switch/Sockets (Public Area) | 18d | 2013-01-07 | 2013-01-29 | T20PA09901C0, T20PA09503C0 |  |  |  |  | 38.11d | 0d |  | ELECTRICAL [362.4 h]; Cost |  |  |  |  | S08PA26019C0 | PT | C | 20 | PA | ME | 260 | 19 | BILL 10 | B10 | S2 | FF | R00 | ACF07 | 260 | FF | MEP |  |  |  |  |  |
| T20PA11001C0 |  | PT-20 ; Wall Protection (WP, CG, WG, FCG) (Public Area) | 18d | 2013-01-19 | 2013-02-10 | T20PA09701C0, T20PA09903C0 SS |  |  |  |  | 40.36d | 2.25d |  | FF&E [40 h]; Cost |  |  | 326 | 1001 | S08PA11001C0 | PT | C | 20 | PA | WF | 110 | 01 | BILL 10 | B10 | S2 | 03 | R00 | ACF08 | b |  |  |  |  |  |  |  |
| T20PA11009C0 |  | PT-20 ; Signage (Public Area) | 18d | 2013-01-19 | 2013-02-10 | T20PA09701C0 |  |  |  |  | 40.36d | 2.25d |  | SIGNAGES [163 h]; SIGNAGES [163.4 no]; Cost |  |  | 322 | 951 | S08PA11009C0 | PT | C | 20 | PA | SA | 110 | 09 | BILL 10 | B10 | S2 | 09 | R00 | ACF08 | c |  |  | 08 |  |  |  |  |

| ID | WBS | Activity | Duration | Start | Finish | Predecessors | Total float | Free float | Calendar | Resources | change id | CCAD BUILDING(SET) | CCAD PHASE(SET) | CCAD FLOOR(SET) | CCAD ZONE(SET) | CCAD WORK(SET) | CCAD SECTION(SET) | CCAD SERIAL No.(SET) | CCAD CBS(SET) | CCAD BILL(SET) | CCAD HANDOVER(SET) | CCAD TAG(SET) | CCAD REV(SET) | CCADACF (SET) | CCAD SSCF | Change Order # | NEW ACTIVITY ID | CCAD CSA | Act Selector % | CCAD SUB ZONE MEP(SET) | CCAD DIVISION(SET) | CCAD MEQ | IDDD |
| --- | --- | --- | --- | --- | --- | --- | --- | --- | --- | --- | --- | --- | --- | --- | --- | --- | --- | --- | --- | --- | --- | --- | --- | --- | --- | --- | --- | --- | --- | --- | --- | --- | --- |
|  | 10 | **Precommissioning Tesing & snagging (Public Area)** |  | 2013-01-29 | 2013-03-23 |  |  |  |  |  |  |  |  |  |  |  |  |  |  |  |  |  |  |  |  |  |  |  |  |  |  |  |  |
| T20TS01805C0 |  | PT-20 ; MEP de-snag, FIREM sign-off | 12d | 2013-01-29 | 2013-02-12 | T20PA26015C0, T20PA21113C0, T20PA23019C0, T20PA26017C0, T20PA26003C0, T20PA27030C0, T20PA26019C0 | 38.11d | 0d |  | TESTING & COMMISSIONING [510 h]; Cost | T20TS01801C0 | PT | C | 20 | TS | SC | 018 | 01 | BILL 10 | B10 | S2 | 01 | R00 | ACF07 | 018 |  |  |  |  |  |  |  |  |
| T20TS01808C0 |  | PT-20 ; Touch-up & Clean / JV inspection /CIR /De-snag | 18d | 2013-02-12 | 2013-03-05 | T20PA05501C0, T20PA08709C0, T20PA09601C0, T20PA09701C0, T20PA09903C0, T20PA09907C0, T20PA11001C0, T20PA11009C0, T20TS01805C0, T20PA09503C0, T20PA09602C0 | 38.11d | 8.61d |  | TESTING & COMMISSIONING [128 h]; Cost | T20TS01802C0 | PT | C | 20 | TS | SC | 018 | 02 | BILL 10 | B10 | S2 | 02 | R00 | ACF07 | 018 |  |  |  |  |  |  |  |  |
| T20TS01811C0 |  | PT-20 ; Consultant's final de-snag inspection | 7d | 2013-03-16 | 2013-03-23 | T20TS01808C0, T19TS01817C0 | 34.5d | 15.85d | R00-C02, Calendar day | Labor General [1 h]; Cost | T20TS01803C0 | PT | C | 20 | TS | SC | 018 | 03 | BILL 10 | B10 | S2 | 03 | R00 | ACF07 | 018 |  |  |  |  |  |  |  |  |
|  | 05 | **TR Room** |  | 2011-10-19 | 2013-01-29 |  |  |  |  |  |  |  |  |  |  |  |  |  |  |  |  |  |  |  |  |  |  |  |  |  |  |  |  |
| T20TR09201C0 |  | PT-20 ; Metal Studs (TR RM) | 17.88d | 2011-10-19 | 2011-11-13 | T20PA09201C0 SS | 88.49d | 0d |  | PARTITIONS [520 h]; PARTITIONS - Metal Studs [72 m]; Cost | T20TR09201C0 | PT | C | 20 | TR | PT | 092 | 01 | BILL 10 | B10 | S2 | 1F | R00 | ACF06 | 092 | 313 | 885 | GP | PMS |  |  |  |  |
| T20TR09203C0 |  | PT-20 ; Partitions 1st face (TR RM) | 33d | 2011-11-13 | 2011-12-24 | T20TR09201C0 | 97.49d | 68d |  | PARTITIONS [72 m]; PARTITIONS [419 h]; Cost | T20TR09203C0 | PT | C | 20 | TR | PT | 092 | 03 | BILL 10 | B10 | S2 | 2F | R00 | ACF06 | 092 | 314 | 886 | GP | P1F |  |  |  |  |
| T20TR26026C0 |  | PT-20 ; 2nd Fix, Conduit (TR RM) | 30d | 2011-11-13 | 2011-12-20 | T20TR09201C0 | 88.49d | 0d |  | ELECTRICAL [734.4 h]; Cost | T20TR26026C0 | PT | C | 20 | TR | ME | 260 | 26 | BILL 10 | B10 | S2 | 2F | R00 | ACF07 | 260 |  |  | MEP |  | 2n |  |  |  |
| T20TR01005C0 |  | PT-20 ; 2nd, Wall Inspection by Consultant (TR RM) | 12d | 2011-12-20 | 2012-01-04 | T20TR26026C0 | 88.49d | 59d |  | Labor General [1.2 h]; Cost | T20TR01005C0 | PT | C | 20 | TR | ME | 010 | 05 | BILL 10 | B10 | S2 | WI | R00 | ACF07 | 010 |  |  | MEP |  | 2n |  |  |  |
| T20TR08101C0 |  | PT-20 ; Door Frames (TR RM) | 18d | 2011-12-28 | 2012-01-18 | T20TR09201C0, GNHE08101C0 FS+126d | 118.12d | 88.64d |  | ASSORTED DOORS [43 h]; Cost | T20TR08101C0 | PT | C | 20 | TR | DO | 081 | 01 | BILL 10 | B10 | S2 | DF | R00 | ACF06 | 081 | 316 | 20001090 |  |  |  | 08 |  |  |
| T20TR09205C0 |  | PT-20 ; Partitions Closing (TR RM) | 42d | 2012-03-14 | 2012-05-02 | T20TR01005C0, T20TR09201C0, T20TR09203C0, TAFOA09214C1 FF, T20TR08101C0 FF, T20PA09205C0 SS | 29.49d | 0d |  | PARTITIONS [72 m]; PARTITIONS [524 h]; Cost | T20TR09205C0 | PT | C | 20 | TR | PT | 092 | 05 | BILL 10 | B10 | S2 | FF | R00 | ACF06 | 092 | 315 | 887 | GP | P2F |  |  |  |  |
| T20TR09901C0 |  | PT-20 ; Wall Prime & 1st coat (TR RM) | 18d | 2012-05-02 | 2012-05-23 | T20TR09205C0 | 29.49d | 0d |  | WALL PAINT [81 h]; WALL PAINT [100 m2]; Cost | T20TR09901C0 | PT | C | 20 | TR | PA | 099 | 01 | BILL 10 | B10 | S2 | 01 | R00 | ACF06 | 099 | 360 | 20001110 |  |  |  |  |  |  |
| T20TR23009C0 |  | PT-20 ; 2nd Fix, Inst of VAV'S CHW connection (TR RM) | 36d | 2012-05-02 | 2012-06-13 | T20TR09205C0 | 71.49d | 0d |  | MECHANICAL [1450.8 h]; Cost | T20TR23009C0 | PT | C | 20 | TR | ME | 230 | 09 | BILL 10 | B10 | S2 | 2F | R00 | ACF07 | 230 |  |  | MEP |  | 2n |  |  |  |
| T20TR23011C0 |  | PT-20 ; 2nd Fix, Inst of VCD's/FD's (TR RM) | 36d | 2012-05-02 | 2012-06-13 | T20TR09205C0 | 71.49d | 0d |  | MECHANICAL [1753.2 h]; Cost | T20TR23011C0 | PT | C | 20 | TR | ME | 230 | 11 | BILL 10 | B10 | S2 | 2F | R00 | ACF07 | 230 |  |  | MEP |  | 2n |  |  |  |
| T20TR26007C0 |  | PT-20 ; 2nd Fix, Cable Pulling (TR RM) | 36d | 2012-05-02 | 2012-06-13 | T20TR09203C0, T20TR09205C0 | 119.49d | 48d |  | ELECTRICAL [2683.2 h]; Cost | T20TR26007C0 | PT | C | 20 | TR | ME | 260 | 07 | BILL 10 | B10 | S2 | 2F | R00 | ACF07 | 260 |  |  | MEP |  | 2n |  |  |  |
| T20TR26009C0 |  | PT-20 ; 2nd Fix, Inst of Equipment (DB, TR, SG,BUS) (TR RM) | 54d | 2012-05-02 | 2012-07-05 | T20TR09205C0 | 83.49d | 54d |  | ELECTRICAL [3943.2 h]; Cost | T20TR26009C0 | PT | C | 20 | TR | ME | 260 | 09 | BILL 10 | B10 | S2 | 2F | R00 | ACF04 | 260 |  |  | MEP |  | 2n |  | E |  |
| T20TR26027C0 |  | PT-20 ; 2nd Fix, Wiring / Cabling (TR RM) | 30d | 2012-05-02 | 2012-06-06 | T20TR09203C0, T20TR09205C0 | 137.49d | 108d |  | ELECTRICAL [392.4 h]; Cost | T20TR26027C0 | PT | C | 20 | TR | ME | 260 | 27 | BILL 10 | B10 | S2 | 2F | R00 | ACF07 | 260 | 417 | 1318 | MEP |  | 2n |  |  |  |
| T20TR09501C0 |  | PT-20 ; Ceiling Grid and Service Tile (TR RM) | 24d | 2012-05-23 | 2012-06-21 | T20TR09205C0, T20TR09901C0 | 29.49d | 0d |  | CEILING GRID FOR GYPSUM [764.59 h]; CEILING GRID FOR GYPSUM [65.24 m2]; Cost | T20TR09501C0 | PT | C | 20 | TR | CE | 095 | 01 | BILL 10 | B10 | S2 | 01 | R00 | ACF06 | 095 | 336 | 1327 |  |  |  |  |  | 1 |
| T20TR09903C0 |  | PT-20 ; Wall - Final Paint (TR RM) | 12d | 2012-05-23 | 2012-06-06 | T20TR09901C0 | 187.36d | 157.88d |  | WALL PAINT [44 h]; WALL PAINT [54 m2]; Cost | T20TR09903C0 | PT | C | 20 | TR | PA | 099 | 03 | BILL 10 | B10 | S2 | 02 | R00 | ACF06 | 099 | 361 | 1312 |  |  |  |  |  |  |
| T20TR23013C0 |  | PT-20 ; 2nd Fix, Insulation of CHW pipe & Duct (TR RM) | 48d | 2012-06-13 | 2012-08-09 | T20TR23009C0, T20TR23011C0 | 71.49d | 0d |  | MECHANICAL [3064.8 h]; Cost | T20TR23013C0 | PT | C | 20 | TR | ME | 230 | 13 | BILL 10 | B10 | S2 | 2F | R00 | ACF07 | 230 |  |  | MEP |  | 2n |  |  |  |
| T20TR09601C0 |  | PT-20 ; Floor Finishes (TR RM) | 24d | 2012-06-21 | 2012-07-19 | T20TR09501C0 | 65.49d | 0d |  | ASSORTED FLOOR FINISH [3264 h]; ASSORTED FLOOR FINISH [1810 m2]; Cost | T20TR09601C0 | PT | C | 20 | TR | FF | 096 | 01 | BILL 10 | B10 | S2 | 01 | R00 | ACF06 | FF | 359 | 20001120 |  |  |  |  |  |  |
| T20TR23003C0 |  | PT-20 ; Final Fix, Inst of Grilles & Diffusers (TR RM) | 30d | 2012-06-21 | 2012-07-26 | T20TR09501C0 | 29.49d | 0d |  | MECHANICAL [1498.8 h]; Cost | T20TR23003C0 | PT | C | 20 | TR | ME | 230 | 03 | BILL 10 | B10 | S2 | FF | R00 | ACF07 | 230 |  |  | MEP |  | FF |  |  |  |
| T20TR23023C0 |  | PT-20 ; 2nd Fix, Flexible ducts (TR RM) | 30d | 2012-06-21 | 2012-07-26 | T20TR09205C0, T20TR09501C0 | 95.49d | 66d |  | MECHANICAL [30 h]; Cost | T20TR23023C0 | PT | C | 20 | TR | ME | 230 | 23 | BILL 10 | B10 | S2 | 2F | R00 | ACF07 | 230 | 412 | 20001140 | MEP |  | 2n |  |  |  |
| T20TR23074C0 |  | PT-20 ; Final Fix, Grilles, panels & diffusers (TR RM) | 30d | 2012-06-21 | 2012-07-26 | T20TR09501C0 | 95.49d | 66d |  | MECHANICAL [1498.8 h]; Cost | T20TR23074C0 | PT | C | 20 | TR | ME | 230 | 74 | BILL 10 | B10 | S2 | FF | R00 | ACF07 | 230 | 419 | 20001160 | MEP |  | FF |  |  |  |
| T20TR26005C0 |  | PT-20 ; 2nd Fix, Wiring for Power/Lighting/Emergency (TR RM) | 30d | 2012-06-21 | 2012-07-26 | T20TR26026C0, T20TR09501C0 | 95.49d | 66d |  | ELECTRICAL [392.4 h]; Cost | T20TR26005C0 | PT | C | 20 | TR | ME | 260 | 05 | BILL 10 | B10 | S2 | 2F | R00 | ACF07 | 260 |  |  | MEP |  | 2n |  |  |  |
| T20TR26015C0 |  | PT-20 ; Final Fix, Inst of Ceiling rose (TR RM) | 30d | 2012-06-21 | 2012-07-26 | T20TR09501C0 | 59.49d | 0d |  | ELECTRICAL [61.2 h]; Cost | T20TR26015C0 | PT | C | 20 | TR | ME | 260 | 15 | BILL 10 | B10 | S2 | FF | R00 | ACF07 | 260 |  |  | MEP |  | FF |  |  |  |
| T20TR27002C0 |  | PT-20 ; 2nd Fix, Dressing of ELV panels (TR RM) | 30d | 2012-06-21 | 2012-07-26 | T20TR09205C0, T20TR27020C0 SS | 59.49d | 0d |  | ELECTRICAL [273.6 h]; Cost | T20TR27002C0 | PT | C | 20 | TR | ME | 270 | 02 | BILL 10 | B10 | S2 | 2F | R00 | ACF07 | 270 |  |  | MEP |  | 2n |  |  |  |
| T20TR27020C0 |  | PT-20 ; 2nd Fix, Inst of ELV Equipment (Panels) (TR RM) | 48d | 2012-06-21 | 2012-08-16 | T20TR09205C0, T20TR09501C0 | 59.49d | 0d |  | ELECTRICAL [1819.2 h]; Cost | T20TR27020C0 | PT | C | 20 | TR | ME | 270 | 20 | BILL 10 | B10 | S2 | 2F | R00 | ACF04 | 270 |  |  | MEP |  | 2n |  | E |  |
| T20TR08105C0 |  | PT-20 ; Doors (TR RM) | 18d | 2012-07-19 | 2012-08-09 | T20TR08101C0, T20TR09501C0, T20TR09601C0, T20TR09901C0 | 83.36d | 0d |  | ASSORTED DOORS [90 h]; ASSORTED DOORS [9 no]; Cost | T20TR08105C0 | PT | C | 20 | TR | DO | 081 | 05 | BILL 10 | B10 | S2 | DR | R00 | ACF06 | 081 | 317 | 1325 |  |  |  | 08 |  |  |
| T20TR21115C0 |  | PT-20 ; 2nd Fix, Gaseous Fire Suppression (TR RM) | 36d | 2012-07-19 | 2012-09-02 | T20TR09601C0 | 65.49d | 36d |  | MECHANICAL [2626.8 h]; Cost | T20TR21115C0 | PT | C | 20 | TR | ME | 211 | 15 | BILL 10 | B10 | S2 | 2F | R00 | ACF07 | 211 | 411 | 20001130 | MEP |  | 2n |  |  |  |
| T20TR26019C0 |  | PT-20 ; Final Fix, Inst of Light fittings (TR RM) | 36d | 2012-07-26 | 2012-09-09 | T20TR26015C0, T20TR09501C0 | 59.49d | 30d |  | ELECTRICAL [7815.6 h]; Cost | T20TR26019C0 | PT | C | 20 | TR | ME | 260 | 19 | BILL 10 | B10 | S2 | FF | R00 | ACF07 | 260 |  |  | MEP |  | FF |  |  |  |
| T20TR26076C0 |  | PT-20 ; Final Fix, Lighting fittings (TR RM) | 36d | 2012-07-26 | 2012-09-09 | T20TR23003C0, T20TR09501C0 | 29.49d | 0d |  | ELECTRICAL [7815.6 h]; Cost | T20TR26076C0 | PT | C | 20 | TR | ME | 260 | 76 | BILL 10 | B10 | S2 | FF | R00 | ACF07 | 260 | 420 | 20001170 | MEP |  | FF |  |  |  |
| T20TR27030C0 |  | PT-20 ; Final Fix, Inst of ELV device (Detector/Speaker) (TR RM) | 36d | 2012-07-26 | 2012-09-09 | T20TR27002C0, T20TR09501C0 | 59.49d | 30d |  | ELECTRICAL [3571.2 h]; Cost | T20TR27030C0 | PT | C | 20 | TR | ME | 270 | 30 | BILL 10 | B10 | S2 | FF | R00 | ACF07 | 270 |  |  | MEP |  | FF |  |  |  |
| T20TR01006C0 |  | PT-20 ; 2nd, Ceiling Inspection by Consultants (TR RM) | 12d | 2012-08-09 | 2012-08-26 | T20TR23009C0, T20TR23011C0, T20TR23013C0, T20TR26007C0, T20TR09501C0 | 71.49d | 42d |  | Labor General [1.2 h]; Cost | T20TR01006C0 | PT | C | 20 | TR | ME | 010 | 06 | BILL 10 | B10 | S2 | CI | R00 | ACF07 | 010 |  |  | MEP |  | 2n |  |  |  |
| T20TR08709C0 |  | PT-20 ; Ironmongery (TR RM) | 20d | 2012-08-09 | 2012-09-04 | T20TR08105C0 | 83.36d | 0d |  | IRONMONGERY [120 h]; IRONMONGERY [12 no]; Cost | T20TR08709C0 | PT | C | 20 | TR | DO | 087 | 09 | BILL 10 | B10 | S2 | IM | R00 | ACF06 | 087 | 322 | 20001100 |  |  |  | 08 |  |  |
| T20TR09905C0 |  | PT-20 ; Ceiling Prime & 1st coat (TR RM) | 18d | 2012-09-04 | 2012-09-25 | T20TR08709C0, T20TR09501C0 | 83.36d | 36d |  | CEILING PAINT [7 h]; CEILING PAINT [7 m2]; Cost | T20TR09905C0 | PT | C | 20 | TR | PA | 099 | 05 | BILL 10 | B10 | S2 | 01 | R00 | ACF06 | 099 | 362 | 1313 |  |  |  |  |  |  |
| T20TR26013C0 |  | PT-20 ; Final Fix, Termination & Gladding of Cables (TR RM) | 30d | 2012-09-09 | 2012-10-14 | T20TR26076C0, T20TR26009C0, T20TR09501C0 | 29.49d | 0d |  | ELECTRICAL [148.8 h]; Cost | T20TR26013C0 | PT | C | 20 | TR | ME | 260 | 13 | BILL 10 | B10 | S2 | FF | R00 | ACF07 | 260 |  |  | MEP |  | FF |  |  |  |
| T20TR09503C0 |  | PT-20 ; Ceiling closure (TR RM) | 20d | 2012-10-14 | 2012-11-08 | T20TR01006C0, T20TR09501C0, T20TR21115C0, T20TR26005C0, T20TR26007C0, T20TR26026C0, T20TR26027C0, T20TR23074C0, T20TR23003C0, T20TR26076C0, T20TR26015C0, T20TR26013C0, T20TR26019C0, T20TR27030C0, T20TR23023C0 | 29.49d | 0d |  | ASSORTED CEILING FINISH [86.1 h]; CEILING GYPSUM [21.32 h]; ASSORTED CEILING FINISH [140 m2]; CEILING GYPSUM [65 m2]; Cost | T20TR09503C0 | PT | C | 20 | TR | CE | 095 | 03 | BILL 10 | B10 | S2 | 02 | R00 | ACF06 | 095 | 337 | 20001080 |  |  |  |  |  |  |
| T20TR09907C0 |  | PT-20 ; Ceiling - Final paint (TR RM) | 12d | 2012-11-08 | 2012-11-24 | T20TR09905C0, T20TR09503C0 | 47.36d | 17.88d |  | CEILING PAINT [4 h]; CEILING PAINT [4 m2]; Cost | T20TR09907C0 | PT | C | 20 | TR | PA | 099 | 07 | BILL 10 | B10 | S2 | 02 | R00 | ACF06 | 099 | 363 | 1314 |  |  |  |  |  |  |
| T20TR26017C0 |  | PT-20 ; Final Fix, Inst of Switch/Sockets (TR RM) | 12d | 2012-11-08 | 2012-11-24 | T20TR09901C0, T20TR09503C0 | 29.49d | 0d |  | ELECTRICAL [362.4 h]; Cost | T20TR26017C0 | PT | C | 20 | TR | ME | 260 | 17 | BILL 10 | B10 | S2 | FF | R00 | ACF07 | 260 |  |  | MEP |  | FF |  |  |  |
| T20TR01802C0 |  | PT-20 ; MEP de-snag, FIREM sign-off | 17.88d | 2012-11-24 | 2012-12-16 | T20TR26017C0, T20TR23074C0, T20TR23003C0, T20TR27030C0, T20TR26076C0, T20TR26013C0, T20TR26015C0, T20TR26019C0 | 29.49d | 0d |  | TESTING & COMMISSIONING [255 h]; Cost | S05CO01851C0 | PT | C | 20 | TR | SC | 018 | 53 | BILL 10 | B10 | S2 | 01 | R00 | ACF07 | 018 |  |  |  |  |  |  |  |  |
| T20TR01801C0 |  | PT-20 ; Touch-up & Clean / JV inspection /CIR /De-snag | 24d | 2012-12-16 | 2013-01-14 | T20TR01802C0, T20TR08709C0, T20TR09601C0, T20TR09903C0, T20TR09907C0, T20TR09503C0 | 29.49d | 0d |  | TESTING & COMMISSIONING [64 h]; Cost | T20TR01851C0 | PT | C | 20 | TR | SC | 018 | 51 | BILL 10 | B10 | S2 | 02 | R00 | ACF07 | 018 | 396 |  |  |  |  |  |  |  |
| T20TR01803C0 |  | PT-20 ; Consultant's final de-snag inspection | 12d | 2013-01-14 | 2013-01-29 | T20TR01801C0 | 29.49d | 4.59d |  | Labor General [1 h]; Cost | CP3TS01803C0 | PT | C | 20 | TR | SC | 018 | 03 | BILL 10 | B10 | S1 | 03 | R00 | ACF07 | 018 |  |  |  |  |  |  |  |  |

| ID | WBS | Activity | Duration | Start | Finish | Predecessors | Complete | Remaining | Planned start | Planned finish | Total float | Free float | Resources | Cost | Actual cost | change id | Phase | CCAD BUILDING(SET) | CCAD PHASE(SET) | CCAD FLOOR(SET) | CCAD ZONE(SET) | CCAD WORK(SET) | CCAD SECTION(SET) | CCAD SERIAL No.(SET) | Area/ Department | Grids | Are | Weight & Nos | Process | Levels | CCAD CBS(SET) | CCAD BILL(SET) | CCAD HANDOVER(SET) | CCAD TAG(SET) | CCAD REV(SET) | CCADACF (SET) | CCAD CSA | CCAD SSCF | P_811 | P_711 | ACCESS DATES | U% | CCAD SUB ZONE MEP(SET) | Act Selector % | Change Order # | NEW ACTIVITY ID | CCAD DIVISION(SET) | CCAD MEQ | TO BE DELETED |
| --- | --- | --- | --- | --- | --- | --- | --- | --- | --- | --- | --- | --- | --- | --- | --- | --- | --- | --- | --- | --- | --- | --- | --- | --- | --- | --- | --- | --- | --- | --- | --- | --- | --- | --- | --- | --- | --- | --- | --- | --- | --- | --- | --- | --- | --- | --- | --- | --- | --- |
|  | 21 | **Level 21** |  | 2011-07-10 | 2013-03-06 |  |  |  |  |  |  |  |  |  |  |  |  |  |  |  |  |  |  |  |  |  |  |  |  |  |  |  |  |  |  |  |  |  |  |  |  |  |  |  |  |  |  |  |  |
|  | 01 | **Structure & Envelopment** |  | 2011-07-10 | 2012-10-18 |  |  |  |  |  |  |  |  |  |  |  |  |  |  |  |  |  |  |  |  |  |  |  |  |  |  |  |  |  |  |  |  |  |  |  |  |  |  |  |  |  |  |  |  |
| T21CO05101C0 |  | PT-21 ; Erection of Structural Steel of 21 th Floor (Common Zone) | 4d | 2011-07-10 A | 2011-07-19 A | T20CO05103C0 | 100% |  | 2011-07-21 | 2011-07-26 |  |  | STRUCTURAL STEEL [10144 h]; STRUCTURAL STEEL [332 T(Fe)]; Cost |  |  | T21CO05101C0 | Z2 | PT | C | 21 | CO | ST | 051 | 01 | PA | 10TH | E | A12A | EREC | 11FLR | BILL 10 | B10 | S2 | 01 | R00 | ACF03 | ST | 051 |  |  |  |  |  |  |  |  |  |  |  |
| T21CO05103C0 |  | PT-21 ; Alignment & welding of 21th Floor (Common Zone) | 2.12d | 2011-08-04 A | 2011-09-29 A | T21CO05101C0 | 100% |  | 2011-08-04 | 2011-08-07 |  |  | STRUCTURAL STEEL [1152 h]; Cost |  |  | T21CO05103C0 | Z2 | PT | C | 21 | CO | ST | 051 | 03 | PA | 10TH | E | A12A | EREC | 11FLR | BILL 10 | B10 | S2 | 02 | R00 | ACF03 | ST | 051 | 90 | 0 |  |  |  |  |  |  |  |  |  |
| T21CO03399C0 |  | PT-21 ; Concrete on Metal Decking 21 FLR (Common Zone) | 10d | 2011-09-05 A | 2011-10-03 | T21CO05305C0 | 80% | 2d | 2011-09-19 | 2011-09-29 | 29d | 0d | CONCRETE [23776 h]; CONCRETE [598 m3]; Cost |  |  | T21CO05335C0 | Z2 | PT | C | 21 | CO | CT | 033 | 99 | PA | 10TH | E | A12A | MDEC | 11FLR | BILL 10 | B10 | S2 | 08 | R00 | ACF03 |  | 033 |  |  | ACCESS | 80 |  |  |  |  |  |  |  |
| T21CO05305C0 |  | PT-21 ; Metal Decking 21 FLR (Common Zone) | 10d | 2011-09-05 A | 2011-09-29 A | T21CO05101C0, T21CO05103C0, TRXCO05101C0, T20CO05305C0 FF+6d | 100% |  | 2011-09-07 | 2011-09-18 |  |  | METAL DECKING [3081 h]; METAL DECKING [3898.75 m2]; Cost |  |  | T21CO05305C0 | Z2 | PT | C | 21 | CO | ST | 053 | 05 | PA | 10TH | E | A12A | MDEC | 11FLR | BILL 10 | B10 | S2 | 03 | R00 | ACF03 | ST | 053 |  |  |  |  |  |  |  |  |  |  |  |
| T21CO07807C0 |  | PT-21 ; Cementitious Fire proofing Lvl 21 (Common Zone) | 12d | 2011-10-13 | 2011-10-27 | TRXCO03399C0 |  |  |  |  | 42.56d | 0d | CEMENTITIOUS FIREPROOFING [3066 h]; CEMENTITIOUS FIREPROOFING [6132 m2]; Cost |  |  | T21CO07807C0 | Z2 | PT | C | 21 | CO | ST | 078 | 07 | PA | 10TH | E | A12A | FIRE | 11FLR | BILL 10 | B10 | S2 | 04 | R00 | ACF03 | ST | 078 |  |  |  |  |  |  |  |  |  |  |  |
| T21CO04415C0 |  | PT-21 ; SG Catwalk Installation (Common Zone) | 52d | 2012-03-20 | 2012-05-20 | TEXCO04407C0 SS+14d, T20CO04415C0 SS |  |  |  |  | 34.02d | 7.4d | Labor General [4710.4 h]; Cost |  |  | I05CO04411C0 |  | PT | C | 21 | CO | FA | 044 | 11 |  |  |  |  |  |  | BILL 10 | B10 | S2 | SG | R00 | ACF05 | FA | 044 |  |  |  |  |  |  |  |  |  |  |  |
| T21CO04403C0 |  | PT-21 ; C4 Bracket (Common Zone) (Including C4 of L20) | 17.88d | 2012-05-03 | 2012-05-23 | T21CO07807C0, T19CO04407C0 |  |  |  |  | 156d | 0d | FACADE CURTAIN WALL 5 [229.6 h]; Cost |  |  | T21CO04403C0 |  | PT | C | 21 | CO | FA | 044 | 03 |  |  |  |  |  |  | BILL 10 | B10 | S2 | FC4 | R00 | ACF05 | FA | 044 |  |  |  |  |  |  |  |  |  |  |  |
| T21CO04405C0 |  | PT-21 ; C4 Transom & Mullion (Common Zone) (Including C4 of L20) | 33.88d | 2012-05-10 | 2012-06-19 | T21CO03399C0, T21CO04403C0 SS+6d, T21CO04403C0 FF |  |  |  |  | 156d | 0d | FACADE CURTAIN WALL 5 [918.2 h]; Cost |  |  | T21CO04405C0 |  | PT | C | 21 | CO | FA | 044 | 05 |  |  |  |  |  |  | BILL 10 | B10 | S2 | FC4 | R00 | ACF05 | FA | 044 |  |  |  |  |  |  |  |  |  |  |  |
| T21CO04407C0 |  | PT-21 ; C4 Glazing (Common Zone) (Including C4 of L20) | 32d | 2012-05-31 | 2012-07-08 | T21CO04405C0 SS+18d, T21CO04405C0 FF |  |  |  |  | 156d | 97.44d | FACADE CURTAIN WALL 4 [4614.6 h]; FACADE SAND LOUVERS [2656 h]; FACADE CURTAIN WALL 4 [2249.33 m2]; FACADE SAND LOUVERS [1294.67 m2]; FACADE TOTAL QUANTITY m2 [3544 m2]; Cost |  |  | T21CO04407C0 |  | PT | C | 21 | CO | FA | 044 | 07 |  |  |  |  |  |  | BILL 10 | B10 | S2 | FC4 | R00 | ACF05 | FA | 044 |  |  |  |  |  |  |  |  |  |  |  |
| T21CO04402C0 |  | PT-21 ; Louvers Bracket (Common Zone) | 18d | 2012-08-08 | 2012-08-30 | T21CO04403C0 SS, TEXCO04413C0 |  |  |  |  | 118d | 0d | FACADE LOUVER & GRILL [1060.7 h]; Cost |  |  | SR8CO04403C0 |  | PT | C | 21 | CO | FA | 044 | 03 |  |  |  |  |  |  | BILL 9 | B10 | S2 | FSL | R00 | ACF05 | FA | 044 |  |  |  |  |  |  |  |  |  |  |  |
| T21CO033L0C0 |  | PT-21 ; Concrete Leave-out for TC#1,2, 21 FLR (Common Zone) | 10d | 2012-08-25 | 2012-09-04 | BLZTC01541C0, BLZTC01542C0 |  |  |  |  | 26.62d | 0d | Labor General [0.5 h]; Cost |  |  | T21CO05335C0 | Z2 | PT | C | 21 | CO | CT | 033 | 99 | PA | 10TH | E | A12A | MDEC | 11FLR | BILL 10 | B10 | S2 | 10 | R00 | ACF03 |  | 033 |  |  |  |  |  |  |  |  |  |  |  |
| T21CO04404C0 |  | PT-21 ; Louvers Glass Transom & Mullion (Common Zone) | 24d | 2012-09-01 | 2012-09-27 | T21CO04402C0 |  |  |  |  | 118d | 0d | FACADE SAND LOUVERS [4241.5 h]; Cost |  |  | SR8CO04406C0 |  | PT | C | 21 | CO | FA | 044 | 06 |  |  |  |  |  |  | BILL 9 | B10 | S2 | FSL | R00 | ACF05 | FA | 044 |  |  |  |  |  |  |  |  |  |  |  |
| T21CO04406C0 |  | PT-21 ; Louvers Glass installation (Common Zone) | 18d | 2012-09-29 | 2012-10-18 | T21CO04404C0 |  |  |  |  | 118d | 75.44d | FACADE LOUVER & GRILL [1767.4 h]; Cost |  |  | SR8CO04405C0 |  | PT | C | 21 | CO | FA | 044 | 05 |  |  |  |  |  |  | BILL 9 | B10 | S2 | FSL | R00 | ACF05 | FA | 044 |  |  |  |  |  |  |  |  |  |  |  |
|  | 04 | **Public Area / Elev Mech( Elev.Lobby & Corridors )** |  | 2011-09-05 | 2013-01-21 |  |  |  |  |  |  |  |  |  |  |  |  |  |  |  |  |  |  |  |  |  |  |  |  |  |  |  |  |  |  |  |  |  |  |  |  |  |  |  |  |  |  |  |  |
| T21PA22019C0 |  | PT-21 ; 1st Fix, Inst of Drainage pipe (ceiling) (Public Area) | 54d | 2011-09-05 A | 2012-03-08 | T21PA23001C0, T21PA26013C0 SS+12d | 5% | 51.3d | 2012-01-18 | 2012-03-21 | 42.56d | 0d | PLUMBING [2326.8 h]; Cost [74493.8 AED] | 74,493.83 | 3,724.69 | S08PA22019C0 |  | PT | C | 21 | PA | ME | 220 | 19 |  |  |  |  |  |  | BILL 10 | B10 | S2 | 1F | R00 | ACF04 | MEP | 220 |  |  |  | 0 | 1S | M1F |  |  |  |  |  |
| T21PA23001C0 |  | PT-21 ; 1st Fix, Inst. of Supports for MEP (Public Area) | 36d | 2011-09-05 A | 2011-12-12 | T21CO07807C0 | 5% | 34.2d | 2011-10-22 | 2011-12-07 | 42.56d | 0d | MECHANICAL [4027.2 h]; Cost [45150.4 AED] | 45,150.38 | 2,257.52 | S08PA23001C0 |  | PT | C | 21 | PA | ME | 230 | 01 |  |  |  |  |  |  | BILL 10 | B10 | S2 | 1F | R00 | ACF04 | MEP | 230 |  |  |  | 0 | 1S | M1F |  |  |  |  |  |
| T21PA26001C0 |  | PT-21 ; 1st Fix, Inst of Trunking/Conduiting (Public Area) | 60d | 2011-09-05 A | 2012-02-19 | T21CO07807C0, T21PA23001C0 | 5% | 57d | 2011-12-08 | 2012-02-18 | 42.56d | 0d | ELECTRICAL [4268.4 h]; Cost [37790.1 AED] | 37,790.1 | 1,889.5 | S08PA26001C0 |  | PT | C | 21 | PA | ME | 260 | 01 |  |  |  |  |  |  | BILL 10 | B10 | S2 | 1F | R00 | ACF04 | MEP | 260 |  |  |  |  | 1S | M1F |  |  |  |  |  |
| T21PA09201C0 |  | PT-21 ; Metal Studs (Public Area) | 30d | 2011-11-01 | 2011-12-12 | T21PA23001C0 SS+12d, T21PA23001C0 FF |  |  |  |  | 123.39d | 0d | PARTITIONS [1328 h]; PARTITIONS - Metal Studs [184 m]; Cost |  |  | S08PA09201C0 |  | PT | C | 21 | PA | PT | 092 | 01 |  |  |  |  |  |  | BILL 10 | B10 | S2 | 1F | R00 | ACF06 | GP | 092 |  |  |  |  |  | PMS | 313 | 944 |  |  |  |
| T21PA22011C0 |  | PT-21 ; 2nd Fix, Drainage/Water pipe (wall) (Public Area) | 42d | 2011-12-12 | 2012-01-31 | T21PA09201C0 |  |  |  |  | 123.39d | 0d | PLUMBING [1378.8 h]; Cost |  |  | S08PA22011C0 |  | PT | C | 21 | PA | ME | 220 | 11 |  |  |  |  |  |  | BILL 10 | B10 | S2 | 2F | R00 | ACF07 | MEP | 220 |  |  |  |  | 2n |  |  |  |  |  |  |
| T21PA26009C0 |  | PT-21 ; 2nd Fix, Inst of Wall conduites (Public Area) | 42d | 2011-12-12 | 2012-01-31 | T21PA09201C0 |  |  |  |  | 123.39d | 0d | ELECTRICAL [734.4 h]; Cost |  |  | S08PA26009C0 |  | PT | C | 21 | PA | ME | 260 | 09 |  |  |  |  |  |  | BILL 10 | B10 | S2 | 2F | R00 | ACF07 | MEP | 260 |  |  |  |  | 2n |  |  |  |  |  |  |
| T21PA27010C0 |  | PT-21 ; 1st Fix, Inst of Trunking for ELV system (Public Area) | 54d | 2011-12-12 | 2012-02-15 | T21CO07807C0, T21PA23001C0, T21PA26001C0 SS+12d |  |  |  |  | 42.56d | 0d | ELECTRICAL [3202.8 h]; Cost |  |  | S08PA27010C0 |  | PT | C | 21 | PA | ME | 270 | 10 |  |  |  |  |  |  | BILL 10 | B10 | S2 | 1F | R00 | ACF04 | MEP | 270 |  |  |  |  | 1S | M1F |  |  |  |  |  |
| T21PA26013C0 |  | PT-21 ; 1st Fix, Inst of Cable Tray (Public Area) | 48d | 2011-12-24 | 2012-02-20 | T21CO07807C0, T21PA23001C0, T21PA27010C0 SS+10d |  |  |  |  | 42.56d | 0d | ELECTRICAL [399.6 h]; Cost |  |  | S08PA26013C0 |  | PT | C | 21 | PA | ME | 260 | 13 |  |  |  |  |  |  | BILL 10 | B10 | S2 | 1F | R00 | ACF04 | MEP | 260 |  |  |  |  | 1S | M1F |  |  |  |  |  |
| T21PA22005C0 |  | PT-21 ; 1st Fix, Inst of Water supply pipe (ceiling) (Public Area) | 60d | 2012-01-08 | 2012-03-19 | T21PA22019C0 SS+10d, T21PA23001C0 |  |  |  |  | 42.56d | 0d | PLUMBING [4548 h]; Cost |  |  | S08PA22005C0 |  | PT | C | 21 | PA | ME | 220 | 05 |  |  |  |  |  |  | BILL 10 | B10 | S2 | 1F | R00 | ACF04 | MEP | 220 |  |  |  |  | 1S | M1F |  |  |  |  |  |
| T21PA09203C0 |  | PT-21 ; Partitions early wall & 1st face (Public Area) | 32.5d | 2012-01-17 | 2012-02-25 | T21PA09201C0, TAFAF26039C0 FF, TAFAF26041C0 FF, TAFAF26045C0 FF |  |  |  |  | 108.83d | 19.44d | PARTITIONS [184 m]; PARTITIONS [1032 h]; Cost |  |  | S08PA09203C0 |  | PT | C | 21 | PA | PT | 092 | 03 |  |  |  |  |  |  | BILL 10 | B10 | S2 | 2F | R00 | ACF06 | GP | 092 |  |  |  |  |  | P1F | 314 | 945 |  |  |  |
| T21PA21111C0 |  | PT-21 ; 1st Fix, Inst of Sprinkler main pipe (Public Area) | 48d | 2012-01-22 | 2012-03-19 | T21PA22005C0 SS+12d, T21PA23001C0 |  |  |  |  | 42.56d | 0d | MECHANICAL [1236 h]; Cost |  |  | S08PA21111C0 |  | PT | C | 21 | PA | ME | 211 | 11 |  |  |  |  |  |  | BILL 10 | B10 | S2 | 1F | R00 | ACF04 | MEP | 211 |  |  |  |  | 1S | M1F |  |  |  |  |  |
| T21PA01005C0 |  | PT-21 ; 2nd, Wall Inspection by Consultant (Public Area) | 6d | 2012-01-31 | 2012-02-08 | T21PA22011C0, T21PA26009C0 |  |  |  |  | 123.39d | 34d | Labor General [0.6 h]; Cost |  |  | S08PA01005C0 |  | PT | C | 21 | PA | ME | 010 | 05 |  |  |  |  |  |  | BILL 10 | B10 | S2 | WI | R00 | ACF07 | MEP | 010 |  |  |  |  | 2n |  |  |  |  |  |  |
| T21PA23017C0 |  | PT-21 ; 1st Fix, Inst of CHW pipe (Public Area) | 54d | 2012-02-06 | 2012-04-09 | T21PA21111C0 SS+12d, T21PA23001C0 |  |  |  |  | 42.56d | 0d | MECHANICAL [2467.2 h]; Cost |  |  | S08PA23017C0 |  | PT | C | 21 | PA | ME | 230 | 17 |  |  |  |  |  |  | BILL 10 | B10 | S2 | 1F | R00 | ACF04 | MEP | 230 |  |  |  |  | 1S | M1F |  |  |  |  |  |
| T21PA23023C0 |  | PT-21 ; 1st Fix, Inst of Main Ducting (Public Area) | 60d | 2012-02-20 | 2012-04-30 | T21PA23001C0, T21PA23017C0 SS+12d |  |  |  |  | 66.56d | 0d | MECHANICAL [8022 h]; Cost |  |  | S08PA23023C0 |  | PT | C | 21 | PA | ME | 230 | 23 |  |  |  |  |  |  | BILL 10 | B10 | S2 | 1F | R00 | ACF04 | MEP | 230 |  |  |  |  | 1S | M1F |  |  |  |  |  |
| T21PA27001C0 |  | PT-21 ; 1st Fix, Wiring/ Cabling work (Public Area) | 48d | 2012-02-20 | 2012-04-16 | T21PA26001C0, T21PA26013C0, T21PA27010C0 |  |  |  |  | 126.56d | 84d | ELECTRICAL [392.4 h]; Cost |  |  | S08PA27001C0 |  | PT | C | 21 | PA | ME | 270 | 01 |  |  |  |  |  |  | BILL 10 | B10 | S2 | 1F | R00 | ACF04 | MEP | 270 |  |  |  |  | 1S | M1F |  |  |  |  |  |
| T21PA08103C0 |  | PT-21 ; Door Frames (Public Area) | 18d | 2012-03-08 | 2012-03-29 | T21PA09201C0, GNHE08101C0 FS+126d, T20R208103C0 SS+3d |  |  |  |  | 111.4d | 22.01d | ASSORTED DOORS [93 h]; Cost |  |  | S08PA08103C0 |  | PT | C | 21 | PA | DO | 081 | 03 |  |  |  |  |  |  | BILL 10 | B10 | S2 | DR | R00 | ACF06 |  | 081 |  |  |  |  |  |  | 316 | 947 | 08 |  |  |
| T21PA09205C0 |  | PT-21 ; Partitions Closing (Public Area) | 31.17d | 2012-03-19 | 2012-04-24 | T21PA01005C0, T21PA09203C0, T21PA22005C0, T21PA22019C0, TAFOA09214C1 FF, T21PA08103C0 FF |  |  |  |  | 89.39d | 0d | PARTITIONS [184 m]; PARTITIONS [1320 h]; Cost |  |  | S08PA09205C0 |  | PT | C | 21 | PA | PT | 092 | 05 |  |  |  |  |  |  | BILL 10 | B10 | S2 | FF | R00 | ACF06 | GP | 092 |  |  |  |  |  | P2F | 315 | 946 |  |  |  |
| T21PA21117C0 |  | PT-21 ; 1st Fix, Inst of Sprinkler branch pipe (Public Area) | 48d | 2012-03-19 | 2012-05-14 | T21PA09201C0, T21PA21111C0 |  |  |  |  | 102.56d | 60d | MECHANICAL [561.6 h]; Cost |  |  | S08PA21117C0 |  | PT | C | 21 | PA | ME | 211 | 17 |  |  |  |  |  |  | BILL 10 | B10 | S2 | 1F | R00 | ACF04 | MEP | 211 |  |  |  |  | 1S | M1F |  |  |  |  |  |
| T21PA23009C0 |  | PT-21 ; 2nd Fix, Inst of VAV'S CHW connection (Public Area) | 42d | 2012-04-09 | 2012-05-28 | T21PA23017C0 |  |  |  |  | 42.56d | 0d | MECHANICAL [1450.8 h]; Cost |  |  | S08PA23009C0 |  | PT | C | 21 | PA | ME | 230 | 09 |  |  |  |  |  |  | BILL 10 | B10 | S2 | 2F | R00 | ACF07 | MEP | 230 |  |  |  |  | 2n |  |  |  |  |  |  |
| T21PA09901C0 |  | PT-21 ; Wall Prime & 1st coat (Public Area) | 30d | 2012-04-24 | 2012-05-29 | T21PA09205C0 |  |  |  |  | 89.39d | 0d | WALL PAINT [151 h]; WALL PAINT [187 m2]; Cost |  |  | S08PA09901C0 |  | PT | C | 21 | PA | PA | 099 | 01 |  |  |  |  |  |  | BILL 10 | B10 | S2 | 01 | R00 | ACF06 |  | 099 |  |  |  |  |  |  | 328 | 956 |  |  |  |
| T21PA26005C0 |  | PT-21 ; 2nd Fix, Wiring for Power/Lighting/Emergency (Public Area) | 42d | 2012-04-24 | 2012-06-12 | T21PA09205C0 |  |  |  |  | 143.39d | 0d | ELECTRICAL [392.4 h]; Cost |  |  | S08PA26005C0 |  | PT | C | 21 | PA | ME | 260 | 05 |  |  |  |  |  |  | BILL 10 | B10 | S2 | 2F | R00 | ACF07 | MEP | 260 |  |  |  |  | 2n |  |  |  |  |  |  |
| T21PA26007C0 |  | PT-21 ; 2nd Fix, Cable Pulling (Public Area) | 48d | 2012-04-24 | 2012-06-20 | T21PA09205C0 |  |  |  |  | 179.39d | 136.83d | ELECTRICAL [2683.2 h]; Cost |  |  | S08PA26007C0 |  | PT | C | 21 | PA | ME | 260 | 07 |  |  |  |  |  |  | BILL 10 | B10 | S2 | 2F | R00 | ACF07 | MEP | 260 |  |  |  |  | 2n |  |  |  |  |  |  |
| T21PA26011C0 |  | PT-21 ; 2nd Fix, Inst of Equipment (DB) (Public Area) | 54d | 2012-04-24 | 2012-06-27 | T21PA09205C0 |  |  |  |  | 165.39d | 106.83d | ELECTRICAL [878.4 h]; Cost |  |  | S08PA26011C0 |  | PT | C | 21 | PA | ME | 260 | 11 |  |  |  |  |  |  | BILL 10 | B10 | S2 | 2F | R00 | ACF04 | MEP | 260 |  |  |  |  | 2n |  |  |  |  | E |  |
| T21PA26053C0 |  | PT-21 ; 2nd Fix, Wiring / Cabling (Public Area) | 42d | 2012-04-24 | 2012-06-12 | T21PA09203C0, T21PA09205C0 |  |  |  |  | 95.39d | 52.83d | ELECTRICAL [392.4 h]; Cost |  |  | S08PA26053C0 |  | PT | C | 21 | PA | ME | 260 | 53 |  |  |  |  |  |  | BILL 10 | B10 | S2 | 2F | R00 | ACF07 | MEP | 260 |  |  |  |  | 2n |  | 389 | 977 |  |  |  |
| T21PA23008C0 |  | PT-21 ; 1st Fix, Inst of VCD's/FD's (Public Area) | 48d | 2012-04-30 | 2012-06-26 | T21PA23023C0 |  |  |  |  | 66.56d | 24d | MECHANICAL [1753.2 h]; Cost |  |  | S08PA23008C0 |  | PT | C | 21 | PA | ME | 230 | 08 |  |  |  |  |  |  | BILL 10 | B10 | S2 | 1F | R00 | ACF04 | MEP | 230 |  |  |  |  | 1S | M1F |  |  |  |  |  |
| T21PA23015C0 |  | PT-21 ; 2nd Fix, Insulation of CHW pipe & Duct (Public Area) | 48d | 2012-05-28 | 2012-07-24 | T21PA23009C0, T21PA23017C0, T21PA23023C0 |  |  |  |  | 42.56d | 0d | MECHANICAL [3064.8 h]; Cost |  |  | S08PA23015C0 |  | PT | C | 21 | PA | ME | 230 | 15 |  |  |  |  |  |  | BILL 10 | B10 | S2 | 2F | R00 | ACF07 | MEP | 230 |  |  |  |  | 2n |  |  |  |  |  |  |
| T21PA05501C0 |  | PT-21 ; Handrails & balustrade (Public Area) | 36d | 2012-05-29 | 2012-07-11 | T21PA09901C0, TAFT105509C0, TAFT805509C0 |  |  |  |  | 213.39d | 170.83d | SECONDARY STEEL [63 h]; Cost |  |  | S08PA05501C0 |  | PT | C | 21 | PA | SW | 055 | 01 |  |  |  |  |  |  | BILL 10 | B10 | S2 | 01 | R00 | ACF03 |  | a |  |  |  |  |  |  |  |  |  |  |  |
| T21PA26015C0 |  | PT-21 ; Final Fix, Termination & Gladding of Cables (Public Area) | 36d | 2012-06-12 | 2012-07-25 | T21PA26005C0 |  |  |  |  | 143.39d | 100.83d | ELECTRICAL [148.8 h]; Cost |  |  | S08PA26015C0 |  | PT | C | 21 | PA | ME | 260 | 15 |  |  |  |  |  |  | BILL 10 | B10 | S2 | FF | R00 | ACF07 | MEP | 260 |  |  |  |  | FF |  |  |  |  |  |  |
| T21PA09501C0 |  | PT-21 ; Ceiling Grid and Service Tile (Public Area) | 18d | 2012-07-24 | 2012-08-14 | T21PA09205C0 SS+15d, T21PA21117C0, T21PA23008C0, T21PA23009C0, T21PA23015C0, T21PA27001C0, T21PA26053C0 FF, T21PA09901C0 |  |  |  |  | 42.56d | 0d | CEILING GRID FOR GYPSUM [2673.63 h]; CEILING GRID FOR GYPSUM [228.81 m2]; Cost |  |  | S08PA09501C0 |  | PT | C | 21 | PA | CE | 095 | 01 |  |  |  |  |  |  | BILL 10 | B10 | S2 | 01 | R00 | ACF06 |  | 095 |  |  |  |  |  |  | 323 | 952 |  |  |  |
| T21PA08107C0 |  | PT-21 ; Doors (Public Area) | 19d | 2012-08-14 | 2012-09-08 | T21PA08103C0, T21PA09501C0, T21PA09601C0, T21PA09901C0 |  |  |  |  | 145.56d | 0d | ASSORTED DOORS [190 h]; ASSORTED DOORS [19 no]; Cost |  |  | S08PA08107C0 |  | PT | C | 21 | PA | DO | 081 | 07 |  |  |  |  |  |  | BILL 10 | B10 | S2 | DR | R00 | ACF06 |  | 081 |  |  |  |  |  |  | 317 | 948 | 08 |  |  |
| T21PA09601C0 |  | PT-21 ; Floor Finishes (Public Area) | 0d | 2012-08-14 | 2012-08-14 | T21PA09501C0 |  |  |  |  | 124.56d | 0d | Cost |  |  | S08PA09601C0 |  | PT | C | 21 | PA | FF | 096 | 01 |  |  |  |  |  |  | BILL 10 | B10 | S2 | 01 | R00 | ACF06 |  | FF |  |  |  |  |  |  | 326 | 955 |  |  | RENAME |
| T21PA09905C0 |  | PT-21 ; Ceiling Prime & 1st coat (Public Area) | 30d | 2012-08-14 | 2012-09-20 | T21PA09501C0 |  |  |  |  | 124.56d | 0d | CEILING PAINT [20 h]; CEILING PAINT [24 m2]; Cost |  |  | S08PA09905C0 |  | PT | C | 21 | PA | PA | 099 | 05 |  |  |  |  |  |  | BILL 10 | B10 | S2 | 01 | R00 | ACF06 |  | 099 |  |  |  |  |  |  | 330 | 958 |  |  |  |
| T21PA21115C0 |  | PT-21 ; 2nd Fix, Inst of Sprinkler droppers (Public Area) | 42d | 2012-08-14 | 2012-10-04 | T21PA09501C0 |  |  |  |  | 48.56d | 0d | MECHANICAL [1602 h]; Cost |  |  | S08PA21115C0 |  | PT | C | 21 | PA | ME | 211 | 15 |  |  |  |  |  |  | BILL 10 | B10 | S2 | 2F | R00 | ACF07 | MEP | 211 |  |  |  |  | 2n |  |  |  |  |  |  |
| T21PA23021C0 |  | PT-21 ; 2nd Fix, Inst of Flexible Duct & Plenum boxes (Public Area) | 42d | 2012-08-14 | 2012-10-04 | T21PA09205C0, T21PA09501C0 |  |  |  |  | 48.56d | 0d | MECHANICAL [30 h]; Cost |  |  | S08PA23021C0 |  | PT | C | 21 | PA | ME | 230 | 21 |  |  |  |  |  |  | BILL 10 | B10 | S2 | 2F | R00 | ACF07 | MEP | 230 |  |  |  |  | 2n |  |  |  |  |  |  |
| T21PA26017C0 |  | PT-21 ; Final Fix, Inst of Ceiling rose (Public Area) | 36d | 2012-08-14 | 2012-09-27 | T21PA09501C0 |  |  |  |  | 42.56d | 0d | ELECTRICAL [61.2 h]; Cost |  |  | S08PA26017C0 |  | PT | C | 21 | PA | ME | 260 | 17 |  |  |  |  |  |  | BILL 10 | B10 | S2 | FF | R00 | ACF07 | MEP | 260 |  |  |  |  | FF |  |  |  |  |  |  |
| T21PA27002C0 |  | PT-21 ; 2nd Fix, Wiring Droppers (Public Area) | 42d | 2012-08-14 | 2012-10-04 | T21PA09501C0 |  |  |  |  | 42.56d | 0d | ELECTRICAL [392.4 h]; Cost |  |  | S08PA27002C0 |  | PT | C | 21 | PA | ME | 270 | 02 |  |  |  |  |  |  | BILL 10 | B10 | S2 | 2F | R00 | ACF07 | MEP | 270 |  |  |  |  | 2n |  |  |  |  |  |  |
| T21PA27020C0 |  | PT-21 ; 2nd Fix, Inst of ELV Equipment (Panels) (Public Area) | 66d | 2012-08-14 | 2012-11-04 | T21PA09205C0, T21PA09501C0 |  |  |  |  | 58.56d | 0d | ELECTRICAL [1819.2 h]; Cost |  |  | S08PA27020C0 |  | PT | C | 21 | PA | ME | 270 | 20 |  |  |  |  |  |  | BILL 10 | B10 | S2 | 2F | R00 | ACF04 | MEP | 270 |  |  |  |  | 2n |  |  |  |  | E |  |
| T21PA08709C0 |  | PT-21 ; Ironmongery (Public Area) | 20d | 2012-09-08 | 2012-10-01 | T21PA08107C0 |  |  |  |  | 145.56d | 103d | IRONMONGERY [220 h]; IRONMONGERY [22 no]; Cost |  |  | S08PA08709C0 |  | PT | C | 21 | PA | DO | 087 | 09 |  |  |  |  |  |  | BILL 10 | B10 | S2 | IM | R00 | ACF06 |  | 087 |  |  |  |  |  |  | 322 | 951 | 08 |  |  |
| T21PA09903C0 |  | PT-21 ; Wall Final Paint (Public Area) | 30d | 2012-09-20 | 2012-10-25 | T21PA09901C0, T21PA09905C0, T21PA09501C0 |  |  |  |  | 124.56d | 72d | WALL PAINT [82 h]; WALL PAINT [101 m2]; Cost |  |  | S08PA09903C0 |  | PT | C | 21 | PA | PA | 099 | 03 |  |  |  |  |  |  | BILL 10 | B10 | S2 | 02 | R00 | ACF06 |  | 099 |  |  |  |  |  |  | 329 | 957 |  |  |  |
| T21PA26003C0 |  | PT-21 ; Final Fix, Inst of Light fittings (Public Area) | 48d | 2012-09-27 | 2012-11-26 | T21PA09501C0, T21PA26017C0 |  |  |  |  | 42.56d | 0d | ELECTRICAL [7815.6 h]; Cost |  |  | S08PA26003C0 |  | PT | C | 21 | PA | ME | 260 | 03 |  |  |  |  |  |  | BILL 10 | B10 | S2 | FF | R00 | ACF07 | MEP | 260 |  |  |  |  | FF |  |  |  |  |  |  |
| T21PA21113C0 |  | PT-21 ; Final Fix, Inst of Sprinklers head/ Extinguisher (Public Area) | 36d | 2012-10-04 | 2012-11-19 | T21PA09501C0, T21PA21115C0 |  |  |  |  | 48.56d | 6d | MECHANICAL [234 h]; Cost |  |  | S08PA21113C0 |  | PT | C | 21 | PA | ME | 211 | 13 |  |  |  |  |  |  | BILL 10 | B10 | S2 | FF | R00 | ACF07 | MEP | 211 |  |  |  |  | FF |  |  |  |  |  |  |
| T21PA23019C0 |  | PT-21 ; Final Fix, Inst of Grilles & Diffusers (Public Area) | 36d | 2012-10-04 | 2012-11-19 | T21PA09501C0, T21PA23021C0 |  |  |  |  | 48.56d | 6d | MECHANICAL [1498.8 h]; Cost |  |  | S08PA23019C0 |  | PT | C | 21 | PA | ME | 230 | 19 |  |  |  |  |  |  | BILL 10 | B10 | S2 | FF | R00 | ACF07 | MEP | 230 |  |  |  |  | FF |  |  |  |  |  |  |
| T21PA27030C0 |  | PT-21 ; Final Fix, Inst of ELV devise (Detector/Speaker) (Public Area) | 42d | 2012-10-04 | 2012-11-26 | T21PA09501C0, T21PA27002C0 |  |  |  |  | 42.56d | 0d | ELECTRICAL [3571.2 h]; Cost |  |  | S08PA27030C0 |  | PT | C | 21 | PA | ME | 270 | 30 |  |  |  |  |  |  | BILL 10 | B10 | S2 | FF | R00 | ACF07 | MEP | 270 |  |  |  |  | FF |  |  |  |  |  |  |
| T21PA09701C0 |  | PT-21 ; Wall finishes (ST, WD, WC) (Public Area) | 36d | 2012-11-04 | 2012-12-18 | T21PA26011C0, T21PA27020C0, T21PA09501C0, T21PA09601C0, T21CO04407C0 |  |  |  |  | 58.56d | 0d | ASSORTED WALL FINISH [120 h]; ASSORTED WALL FINISH [138 m2]; Cost |  |  | S08PA09701C0 |  | PT | C | 21 | PA | WF | 097 | 01 |  |  |  |  |  |  | BILL 10 | B10 | S2 | 01 | R00 | ACF06 |  | 097 |  |  |  |  |  |  | 105 | 1002 |  |  |  |
| T21PA01006C0 |  | PT-21 ; 2nd, Ceiling Inspection by Consultants (Public Area) | 6d | 2012-11-26 | 2012-12-04 | T21PA21115C0, T21PA23009C0, T21PA23015C0, T21PA27002C0, T21PA09501C0, T21PA21113C0, T21PA23019C0, T21PA26015C0, T21PA26017C0, T21PA26003C0, T21PA27030C0 |  |  |  |  | 42.56d | 0d | Labor General [0.6 h]; Cost |  |  | S08PA01006C0 |  | PT | C | 21 | PA | ME | 010 | 06 |  |  |  |  |  |  | BILL 10 | B10 | S2 | CI | R00 | ACF07 | MEP | 010 |  |  |  |  | 2n |  |  |  |  |  |  |
| T21PA09503C0 |  | PT-21 ; Ceiling closure - ACT/Gypsum (Public Area) | 22d | 2012-12-04 | 2012-12-30 | T21PA01006C0, T21PA21115C0, T21PA26005C0, T21PA27001C0, T21PA27002C0, TAFOA09513C1 FF, T21PA23021C0, T21PA26007C0 |  |  |  |  | 42.56d | 0d | ASSORTED CEILING FINISH [301.96 h]; CEILING GYPSUM [75.03 h]; ASSORTED CEILING FINISH [491 m2]; CEILING GYPSUM [229 m2]; Cost |  |  | S08PA09503C0 |  | PT | C | 21 | PA | CE | 095 | 03 |  |  |  |  |  |  | BILL 10 | B10 | S2 | 02 | R00 | ACF06 |  | 095 |  |  |  |  |  |  | 324 | 953 |  |  |  |
| T21PA11001C0 |  | PT-21 ; Wall Protection (WP, CG, WG, FCG) (Public Area) | 24d | 2012-12-18 | 2013-01-16 | T21PA09701C0, T21PA09903C0 SS |  |  |  |  | 58.56d | 16d | FF&E [9 h]; Cost |  |  | S08PA11001C0 |  | PT | C | 21 | PA | WF | 110 | 01 |  |  |  |  |  |  | BILL 10 | B10 | S2 | 03 | R00 | ACF08 |  | b |  |  |  |  |  |  | 326 | 1001 |  |  |  |
| T21PA11009C0 |  | PT-21 ; Signage (Public Area) | 14d | 2012-12-18 | 2013-01-05 | T21PA09701C0 |  |  |  |  | 68.56d | 26d | SIGNAGES [28 h]; SIGNAGES [27.54 no]; Cost |  |  | S08PA11009C0 |  | PT | C | 21 | PA | SA | 110 | 09 |  |  |  |  |  |  | BILL 10 | B10 | S2 | 09 | R00 | ACF08 |  | c |  |  |  |  |  |  | 322 | 951 | 08 |  |  |
| T21PA09907C0 |  | PT-21 ; Ceiling Final paint (Public Area) | 18d | 2012-12-30 | 2013-01-21 | T21PA09601C0, T21PA09905C0, T21PA09503C0 |  |  |  |  | 54.56d | 12d | CEILING PAINT [12 h]; CEILING PAINT [13 m2]; Cost |  |  | S08PA09907C0 |  | PT | C | 21 | PA | PA | 099 | 07 |  |  |  |  |  |  | BILL 10 | B10 | S2 | 02 | R00 | ACF06 |  | 099 |  |  |  |  |  |  | 331 | 959 |  |  |  |
| T21PA26019C0 |  | PT-21 ; Final Fix, Inst of Switch/Sockets (Public Area) | 18d | 2012-12-30 | 2013-01-21 | T21PA09901C0, T21PA09503C0 |  |  |  |  | 42.56d | 0d | ELECTRICAL [362.4 h]; Cost |  |  | S08PA26019C0 |  | PT | C | 21 | PA | ME | 260 | 19 |  |  |  |  |  |  | BILL 10 | B10 | S2 | FF | R00 | ACF07 | MEP | 260 |  |  |  |  | FF |  |  |  |  |  |  |

| ID | WBS | Activity | Duration | Start | Finish | Predecessors | Complete | Remaining | Planned start | Planned finish | Total float | Free float | Resources | Change Order # | NEW ACTIVITY ID | change id | CCAD BUILDING(SET) | CCAD PHASE(SET) | CCAD DIVISION(SET) | CCAD FLOOR(SET) | CCAD ZONE(SET) | CCAD WORK(SET) | CCAD SECTION(SET) | CCAD SERIAL No.(SET) | CCAD CBS(SET) | CCAD BILL(SET) | CCAD HANDOVER(SET) | CCAD TAG(SET) | CCAD REV(SET) | CCADACF (SET) | CCAD SSCF | CCAD CSA | P_811 | P_711 | U% | Phase | Area/ Department | Grids | Are | Weight & Nos | Process | Levels |
| --- | --- | --- | --- | --- | --- | --- | --- | --- | --- | --- | --- | --- | --- | --- | --- | --- | --- | --- | --- | --- | --- | --- | --- | --- | --- | --- | --- | --- | --- | --- | --- | --- | --- | --- | --- | --- | --- | --- | --- | --- | --- | --- |
|  | 05 | **Roof** |  | 2012-06-19 | 2012-07-31 |  |  |  |  |  |  |  |  |  |  |  |  |  |  |  |  |  |  |  |  |  |  |  |  |  |  |  |  |  |  |  |  |  |  |  |  |  |
| T21RF07101C0 |  | PT-21 ; Water Proofing Membrane (Roof) | 24d | 2012-06-19 | 2012-07-17 | T21BM03301C0, T21CO04405C0 |  |  |  |  | 196.12d | 0d | THERMAL & MOISTURE [840 h]; Cost | 302 | 335 | T21RF07101C0 | PT | C | 03 | 21 | RF | FF | 071 | 01 | BILL 10 | B10 | S2 | 04 | R00 | ACF03 | 071 |  |  |  |  |  |  |  |  |  |  |  |
| T21RF09601C0 |  | PT-21 ; Paving / Surfacing (Roof) | 12d | 2012-07-17 | 2012-07-31 | T21RF07101C0 |  |  |  |  | 196.12d | 153.56d | ASSORTED FLOOR FINISH [80 h]; Cost | 302 | 335 | T21RF09601C0 | PT | C | 03 | 21 | RF | FF | 096 | 01 | BILL 10 | B10 | S2 | 01 | R00 | ACF06 | PV |  |  |  |  |  |  |  |  |  |  |  |
|  | 06 | **BMU** |  | 2011-10-01 | 2012-02-20 |  |  |  |  |  |  |  |  |  |  |  |  |  |  |  |  |  |  |  |  |  |  |  |  |  |  |  |  |  |  |  |  |  |  |  |  |  |
| T09BM033B2C0 |  | PT-09 ; Brackets Installation (BMU-B2,3,5) | 24d | 2011-10-01 | 2011-10-27 | T09CO05115C0, T10CO03399C0 |  |  |  |  | 232.62d | 0d | Labor General [0.5 h]; Cost | 302 | 335 | T21BM03301C0 | PT | C | 03 | 09 | BM | BMU | 055 | 01 | BILL 10 | B10 | S2 | BMU | R00 | ACF03 | BMU | BMU |  |  |  |  |  |  |  |  |  |  |
| T21BM03301C0 |  | PT-21 ; Concrete Plinth (BMU-A1) | 24d | 2011-10-03 | 2011-10-31 | T09BM033B2C0 FF, T21CO03399C0 |  |  |  |  | 230.39d | 0d | CONCRETE [4968 h]; CONCRETE [125 m3]; Cost | 302 | 335 | T21BM03301C0 | PT | C | 03 | 21 | BM | CT | 033 | 01 | BILL 10 | B10 | S2 | 10 | R00 | ACF03 | 033 |  |  |  |  |  |  |  |  |  |  |  |
| T09BM055B2C0 |  | PT-09 ; Steel Tracking (BMU-B2,3,5) | 56d | 2011-10-29 | 2012-01-08 | OGNMU00053S0, T09BM033B2C0, T09CO07807C0 |  |  |  |  | 314d | 0d | Labor General [0.5 h]; Cost | 302 | 335 | T21BM05501C0 | PT | C | 03 | 09 | BM | BMU | 055 | 01 | BILL 10 | B10 | S2 | BMU | R00 | ACF03 | BMU | BMU |  |  |  |  |  |  |  |  |  |  |
| T21BM05501C0 |  | PT-21 ; Steel Tracking (BMU-A1) | 24d | 2011-10-31 | 2011-12-04 | T21BM03301C0 |  |  |  |  | 230.39d | 0d | SECONDARY STEEL [63 h]; Cost | 302 | 335 | T21BM05501C0 | PT | C | 03 | 21 | BM | BMU | 055 | 01 | BILL 10 | B10 | S2 | BMU | R00 | ACF03 | BMU | BMU |  |  |  |  |  |  |  |  |  |  |
| T21BM11001C0 |  | PT-21 ; BMU Machine (BMU-A1) | 35.98d | 2011-12-04 | 2012-01-16 | T21BM05501C0 |  |  |  |  | 230.39d | 203.76d | FF&E [8020 h]; MECHANICAL [42574 h]; Cost | 302 | 335 | T21BM11001C0 | PT | C | 03 | 21 | BM | BMU | 110 | 01 | BILL 10 | B10 | S2 | BMU | R00 |  | BMU | BMU |  |  |  |  |  |  |  |  |  |  |
| T09BM110B2C0 |  | PT-09 ; BMU Machine (BMU-B2,3,5) | 36d | 2012-01-09 | 2012-02-20 | T09BM055B2C0 |  |  |  |  | 314d | 40.5d | Labor General [0.5 h]; Cost | 302 | 335 | T21BM11001C0 | PT | C | 03 | 09 | BM | BMU | 110 | 01 | BILL 10 | B10 | S2 | BMU | R00 |  | BMU | BMU |  |  |  |  |  |  |  |  |  |  |
|  | 10 | **Precommissioning Tesing & snagging** |  | 2013-01-21 | 2013-03-06 |  |  |  |  |  |  |  |  |  |  |  |  |  |  |  |  |  |  |  |  |  |  |  |  |  |  |  |  |  |  |  |  |  |  |  |  |  |
| T21TS01801C0 |  | PT-21 ; MEP de-snag, FIREM sign-off | 12d | 2013-01-21 | 2013-02-05 | T21PA26015C0, T21PA21113C0, T21PA23019C0, T21PA26017C0, T21PA26003C0, T21PA27030C0, T21PA26019C0, T21CO04406C0 |  |  |  |  | 42.56d | 0d | TESTING & COMMISSIONING [2040 h]; Cost |  |  | T21TS01801C0 | PT | C |  | 21 | TS | SC | 018 | 01 | BILL 10 | B10 | S2 | 01 | R00 | ACF07 | 018 |  |  |  |  |  |  |  |  |  |  |  |
| T21TS01802C0 |  | PT-21 ; Touch-up & Clean / JV inspection /CIR /De-snag | 18d | 2013-02-05 | 2013-02-26 | T21PA05501C0, T21PA08709C0, T21PA09601C0, T21PA09701C0, T21PA09903C0, T21PA09907C0, T21PA11001C0, T21PA11009C0, T21TS01801C0, TAFT105509C0, TAFT805509C0, T21PA09503C0, T21RF09601C0, T09BM110B2C0, T21BM11001C0, T21CO04407C0 |  |  |  |  | 42.56d | 0d | TESTING & COMMISSIONING [340 h]; Cost |  |  | T21TS01802C0 | PT | C |  | 21 | TS | SC | 018 | 02 | BILL 10 | B10 | S2 | 02 | R00 | ACF07 | 018 |  |  |  |  |  |  |  |  |  |  |  |
| T21TS01803C0 |  | PT-21 ; Consultant's final de-snag inspection | 7d | 2013-02-26 | 2013-03-06 | T21TS01802C0 |  |  |  |  | 42.56d | 15.94d | Labor General [0.5 h]; Cost |  |  | T21TS01803C0 | PT | C |  | 21 | TS | SC | 018 | 03 | BILL 10 | B10 | S2 | 03 | R00 | ACF07 | 018 |  |  |  |  |  |  |  |  |  |  |  |
|  | RF | **Level 21 Roof** |  | 2011-08-10 | 2013-04-02 |  |  |  |  |  |  |  |  |  |  |  |  |  |  |  |  |  |  |  |  |  |  |  |  |  |  |  |  |  |  |  |  |  |  |  |  |  |
|  | 01 | **Structure & Envelopment** |  | 2011-08-10 | 2012-09-16 |  |  |  |  |  |  |  |  |  |  |  |  |  |  |  |  |  |  |  |  |  |  |  |  |  |  |  |  |  |  |  |  |  |  |  |  |  |
| TRXCO05101C0 |  | PT-RX ; Erection of Structural Steel Roof Floor (Common Zone) | 5d | 2011-08-10 A | 2011-10-01 | T21CO05101C0 SS | 95% | 0.24d | 2011-08-04 | 2011-08-10 | 29d | 0d | STRUCTURAL STEEL [2473 h]; STRUCTURAL STEEL [81 T(Fe)]; Cost |  |  | TRXCO05101C0 | PT | C |  | RX | CO | ST | 051 | 01 | BILL 10 | B10 | S2 | 01 | R00 | ACF03 | 051 | ST | 95 | 0 | 95 | Z2 | PA | 22ND | H | A12D | EREC | ROOF |
| TRXCO05103C0 |  | PT-RX ; Alignment & welding Roof Floor (Common Zone) | 3d | 2011-08-10 A | 2011-10-01 | TRXCO05101C0 | 100% | 0d | 2011-08-10 | 2011-08-14 | 42.56d | 0d | Cost |  |  | TRXCO05103C0 | PT | C |  | RX | CO | ST | 051 | 03 | BILL 10 | B10 | S2 | 02 | R00 | ACF03 | 051 | ST | 80 | 0 | 95 | Z2 | PA | 22ND | H | A12D | EREC | ROOF |
| TRXCO05305C0 |  | PT-RX ; Metal Decking R FLR (Common Zone) | 10d | 2011-09-05 A | 2011-10-06 | TRXCO05103C0, T21CO05305C0 FF+6d | 50% | 5d | 2011-09-14 | 2011-09-25 | 42.56d | 0d | METAL DECKING [7854 h]; METAL DECKING [9942 m2]; Cost |  |  | TRXCO05305C0 | PT | C |  | RX | CO | ST | 053 | 05 | BILL 10 | B10 | S2 | 03 | R00 | ACF03 | 053 | ST |  |  |  | Z2 | PA | 22ND | H | A12D | MDEC | ROOF |
| TRXCO03399C0 |  | PT-RX ; Concrete on Metal Decking R FLR (Common Zone) | 10d | 2011-09-06 A | 2011-10-13 | TRXCO05305C0 | 40% | 6d | 2011-09-26 | 2011-10-06 | 42.56d | 0d | CONCRETE [32160 h]; CONCRETE [809 m3]; Cost |  |  | TRXCO05335C0 | PT | C |  | RX | CO | CT | 033 | 99 | BILL 10 | B10 | S2 | 08 | R00 | ACF03 | 033 |  |  |  | 40 | Z2 | PA | 22ND | H | A12D | MDEC | ROOF |
| TRXCO033L0C0 |  | PT-RX ; Concrete Leave-out for TC#1,2, 21 FLR (Common Zone) | 9.75d | 2012-09-05 | 2012-09-16 | BLZTC01541C0, BLZTC01542C0, T21CO033L0C0 |  |  |  |  | 26.62d | 0d | Labor General [1 h]; Cost |  |  | T21CO05335C0 | PT | C |  | 21 | CO | CT | 033 | 99 | BILL 10 | B10 | S2 | 10 | R00 | ACF03 | 033 |  |  |  |  | Z2 | PA | 10TH | E | A12A | MDEC | 11FLR |
|  | 02 | **Roof** |  | 2012-09-16 | 2012-11-14 |  |  |  |  |  |  |  |  |  |  |  |  |  |  |  |  |  |  |  |  |  |  |  |  |  |  |  |  |  |  |  |  |  |  |  |  |  |
| TRXRF05501C0 |  | PT-RX ; Parapet Balustrade Steel (Roof) | 12d | 2012-09-16 | 2012-09-30 | TRXCO03399C0, TRXCO033L0C0 |  |  |  |  | 28.88d | 2.25d | SECONDARY STEEL [106 h]; Cost | 302 | 335 | TRXRF05501C0 | PT | C | 03 | RX | RF | SW | 055 | 01 | BILL 10 | B10 | S2 | 01 | R00 | ACF03 | 055 |  |  |  |  |  |  |  |  |  |  |  |
| TRXRF07101C0 |  | PT-RX ; Water Proofing Membrane (Roof) | 22.5d | 2012-10-03 | 2012-10-31 | TRXRF05501C0, TRXSP03301C0 |  |  |  |  | 26.62d | 0d | THERMAL & MOISTURE [416 h]; Cost | 302 | 335 | TRXRF07101C0 | PT | C | 03 | RX | RF | FF | 071 | 01 | BILL 10 | B10 | S2 | 04 | R00 | ACF03 | 071 |  |  |  |  |  |  |  |  |  |  |  |
| TRXRF09601C0 |  | PT-RX ; Paving / Surfacing (Roof) | 12d | 2012-10-31 | 2012-11-14 | TRXRF07101C0, TV09GZ07105R2 |  |  |  |  | 26.62d | 0d | ASSORTED FLOOR FINISH [32 h]; Cost | 302 | 335 | TRXRF09601C0 | PT | C | 03 | RX | RF | FF | 096 | 01 | BILL 10 | B10 | S2 | 08 | R00 | ACF09 | PV |  |  |  |  |  |  |  |  |  |  |  |

| ID | WBS | Activity | Duration | Start | Finish | Predecessors | Complete | Remaining | Planned start | Planned finish | Total float | Free float | Constraint | Resources | Cost | Actual cost | Change Order # | NEW ACTIVITY ID | change id | CCAD BUILDING(SET) | CCAD PHASE(SET) | CCAD DIVISION(SET) | CCAD FLOOR(SET) | CCAD ZONE(SET) | CCAD WORK(SET) | CCAD SECTION(SET) | CCAD SERIAL No.(SET) | CCAD CBS(SET) | CCAD BILL(SET) | CCAD HANDOVER(SET) | CCAD TAG(SET) | CCAD REV(SET) | CCADACF (SET) | CCAD SSCF | CCAD CSA | P_811 | P_711 | U% | CCAD SUB ZONE MEP(SET) |
| --- | --- | --- | --- | --- | --- | --- | --- | --- | --- | --- | --- | --- | --- | --- | --- | --- | --- | --- | --- | --- | --- | --- | --- | --- | --- | --- | --- | --- | --- | --- | --- | --- | --- | --- | --- | --- | --- | --- | --- |
|  | 03 | **Solar Panel** |  | 2012-09-16 | 2013-03-04 |  |  |  |  |  |  |  |  |  |  |  |  |  |  |  |  |  |  |  |  |  |  |  |  |  |  |  |  |  |  |  |  |  |  |
| TRXSP03301C0 |  | PT-RX ; Concrete Plinth (Solar Panel) | 14.25d | 2012-09-16 | 2012-10-02 | TRXCO03399C0, TRXCO033L0C0 |  |  |  |  | 26.62d | 0d |  | CONCRETE [4968 h]; CONCRETE [125 m3]; Cost |  |  | 302 | 335 | TRXSP03301C0 | PT | C | 03 | RX | SP | CT | 033 | 01 | BILL 10 | B10 | S2 | 10 | R00 | ACF03 | 033 |  |  |  |  |  |
| TRXSP05501C0 |  | PT-RX ; Steel Frame (Solar Panel) | 24d | 2012-11-14 | 2012-12-15 | TRXRF09601C0, TRXSP03301C0 |  |  |  |  | 26.62d | 0d |  | SECONDARY STEEL [106 h]; Cost |  |  | 302 | 335 | TRXSP05501C0 | PT | C | 03 | RX | SP | SW | 055 | 01 | BILL 10 | B10 | S2 | 03 | R00 | ACF03 | 055 |  |  |  |  |  |
| TRXSP22001C0 |  | PT-RX ; Plumbing Pipe (Solar Panel) | 23.88d | 2012-12-15 | 2013-01-13 | TRXSP05501C0 |  |  |  |  | 26.62d | 0d |  | PLUMBING [8294.4 h]; Cost |  |  | 302 | 335 | TRXSP22001C0 | PT | C | 03 | RX | SP | ME | 220 | 01 | BILL 10 | B10 | S2 | FF | R00 | ACF04 | 220 | MEP |  |  |  |  |
| TRXSP23001C0 |  | PT-RX ; Solar Panel (Solar Panel) | 42d | 2013-01-13 | 2013-03-04 | TRXSP22001C0 |  |  |  |  | 26.62d | 0d |  | MECHANICAL [17311.2 h]; Cost |  |  | 302 | 335 | TRXSP23001C0 | PT | C | 03 | RX | SP | ME | 230 | 01 | BILL 10 | B10 | S2 | FF | R00 | ACF07 | 230 | MEP |  |  |  |  |
|  | 10 | **Precommissioning Tesing & snagging** |  | 2013-01-13 | 2013-04-02 |  |  |  |  |  |  |  |  |  |  |  |  |  |  |  |  |  |  |  |  |  |  |  |  |  |  |  |  |  |  |  |  |  |  |
| TRXTS01801C0 |  | PT-RX ; MEP de-snag, FIREM sign-off | 12d | 2013-01-13 | 2013-01-28 | TRXSP22001C0 |  |  |  |  | 56.62d | 30d |  | TESTING & COMMISSIONING [1530 h]; Cost |  |  |  |  | TRXTS01801C0 | PT | C |  | RX | TS | SC | 018 | 01 | BILL 10 | B10 | S2 | 01 | R00 | ACF07 | 018 |  |  |  |  |  |
| TRXTS01802C0 |  | PT-RX ; Touch-up & Clean / JV inspection /CIR /De-snag | 18d | 2013-03-04 | 2013-03-25 | TRXRF09601C0, TRXSP05501C0, TRXSP23001C0, TRXTS01801C0, PAFT2205509C1 |  |  |  |  | 26.62d | 0d |  | TESTING & COMMISSIONING [255 h]; Cost |  |  |  |  | TRXTS01802C0 | PT | C |  | RX | TS | SC | 018 | 02 | BILL 10 | B10 | S2 | 02 | R00 | ACF07 | 018 |  |  |  |  |  |
| TRXTS01803C0 |  | PT-RX ; Consultant's final de-snag inspection | 7d | 2013-03-25 | 2013-04-02 | TRXTS01802C0, T21TS01803C0 |  |  |  |  | 26.62d | 10.97d |  | Labor General [1 h]; Cost |  |  |  |  | TRXTS01803C0 | PT | C |  | RX | TS | SC | 018 | 03 | BILL 10 | B10 | S2 | 03 | R00 | ACF07 | 018 |  |  |  |  |  |
|  | EX | **External** |  | 2011-08-22 | 2012-08-07 |  |  |  |  |  |  |  |  |  |  |  |  |  |  |  |  |  |  |  |  |  |  |  |  |  |  |  |  |  |  |  |  |  |  |
|  | 01 | **Structure & Envelopment** |  | 2011-08-22 | 2012-08-07 |  |  |  |  |  |  |  |  |  |  |  |  |  |  |  |  |  |  |  |  |  |  |  |  |  |  |  |  |  |  |  |  |  |  |
| TEXCO04403C0 |  | PT-EX ; Diamond Tube Steel(10~12FL) (Common Zone) | 66d | 2011-08-22 A | 2012-03-19 | T12CO04407C0 FS+45d | 10% | 59.4d | 2011-12-13 | 2012-02-29 | 9d | 0d |  | FACADE DIAMOND GLASS [36623.9 h]; Cost |  |  |  |  | TEXCO04403C0 | PT | C |  | EX | CO | FA | 044 | 03 | BILL 10 | B10 | S2 | FDG | R00 | ACF05 | 044 | FA | 10 | 0 | 10 |  |
| TEXCO04405C0 |  | PT-EX ; Diamond Tube Steel(13~15FL) (Common Zone) | 66d | 2011-08-22 A | 2012-04-23 | T15CO04407C0, TEXCO04403C0 FF+30d | 10% | 59.4d | 2011-12-13 | 2012-02-29 | 9d | 0d |  | FACADE DIAMOND GLASS [41530.6 h]; Cost |  |  |  |  | TEXCO04405C0 | PT | C |  | EX | CO | FA | 044 | 05 | BILL 10 | B10 | S2 | FDG | R00 | ACF05 | 044 | FA | 10 | 0 | 10 |  |
| TEXCO04407C0 |  | PT-EX ; Diamond Tube Steel(16~21FL) (Common Zone) | 66d | 2011-08-22 A | 2012-05-28 | T17CO04407C0 SS+14d, T18CO04407C0 SS+14d, T21CO03399C0, TEXCO04405C0 FF+30d | 10% | 59.4d | 2012-01-30 | 2012-04-16 | 26.62d | 0d |  | FACADE DIAMOND GLASS [41676.7 h]; Cost |  |  |  |  | TEXCO04407C0 | PT | C |  | EX | CO | FA | 044 | 07 | BILL 10 | B10 | S2 | FDG | R00 | ACF05 | 044 | FA | 10 | 0 | 10 |  |
| TEXCO04409C0 |  | PT-EX ; Diamond Glass(10~12FL) (Common Zone) | 60d | 2012-04-15 | 2012-06-25 | TEXCO04403C0, TEXCO04403C0 FF, T12CO04415C0 |  |  |  |  | 35.12d | 0d | start on or after 2012-04-15 | FACADE DIAMOND GLASS [15751.3 h]; FACADE DIAMOND GLASS [5758 m2]; FACADE TOTAL QUANTITY m2 [5758 m2]; Cost |  |  |  |  | TEXCO04409C0 | PT | C |  | EX | CO | FA | 044 | 09 | BILL 10 | B10 | S2 | FDG | R00 | ACF05 | 044 | FA |  |  |  |  |
| TEXCO04411C0 |  | PT-EX ; Diamond Glass(13~15FL) (Common Zone) | 60d | 2012-05-02 | 2012-07-12 | TEXCO04405C0, TEXCO04405C0 FF, TEXCO04409C0 SS+15d, T15CO04415C0 |  |  |  |  | 35.12d | 8.5d |  | FACADE DIAMOND GLASS [21003.2 h]; FACADE DIAMOND GLASS [7677 m2]; FACADE TOTAL QUANTITY m2 [7677 m2]; Cost |  |  |  |  | TEXCO04411C0 | PT | C |  | EX | CO | FA | 044 | 11 | BILL 10 | B10 | S2 | FDG | R00 | ACF05 | 044 | FA |  |  |  |  |
| TEXCO04413C0 |  | PT-EX ; Diamond Glass(16~21FL) (Common Zone) | 60d | 2012-05-29 | 2012-08-07 | TEXCO04407C0, TEXCO04407C0 FF, TEXCO04411C0 SS+14d, T21CO04415C0 |  |  |  |  | 26.62d | 0d |  | FACADE DIAMOND GLASS [26250.8 h]; FACADE DIAMOND GLASS [9596 m2]; FACADE TOTAL QUANTITY m2 [9596 m2]; Cost |  |  |  |  | TEXCO04413C0 | PT | C |  | EX | CO | FA | 044 | 13 | BILL 10 | B10 | S2 | FDG | R00 | ACF05 | 044 | FA |  |  |  |  |
|  | AF | **MEP Risers** |  | 2011-09-05 | 2012-09-29 |  |  |  |  |  |  |  |  |  |  |  |  |  |  |  |  |  |  |  |  |  |  |  |  |  |  |  |  |  |  |  |  |  |  |
|  | 02 | **MEP Risers** |  | 2011-09-05 | 2012-02-25 |  |  |  |  |  |  |  |  |  |  |  |  |  |  |  |  |  |  |  |  |  |  |  |  |  |  |  |  |  |  |  |  |  |  |
| TAFAF22005C0 |  | PT-AF ; Risers-Secondary Steel for Domestic cold water risers (All Floor) | 18d | 2011-09-05 A | 2011-10-19 | IAFAF22005C0, SAFAF22005C0, TRXCO05101C0 | 100% | 0d | 2011-09-20 | 2011-10-11 | 179.08d | 56.88d |  | Cost [11138 AED] | 11,138.05 | 3,898.32 | 1122 | 224 | TAFAF22005C0 | PT | C |  | AF | AF | ME | 220 | 05 | BILL 11 | B10 | S2 | RI | R00 | ACF04 | 220 | MEP |  |  | 10 | RI |
| TAFAF22007C0 |  | PT-AF ; Risers-Secondary Steel for Hot water risers (All Floor) | 18d | 2011-09-05 A | 2011-10-19 | IAFAF22007C0, SAFAF22007C0, TRXCO05101C0 | 100% | 0d | 2011-09-20 | 2011-10-11 | 179.2d | 45d |  | Cost [6447.75 AED] | 6,447.75 | 2,256.71 | 1123 | 225 | TAFAF22007C0 | PT | C |  | AF | AF | ME | 220 | 07 | BILL 11 | B10 | S2 | RI | R00 | ACF04 | 220 | MEP |  |  | 10 | RI |
| TAFAF22009C0 |  | PT-AF ; Risers-Secondary Steel for Medical Gas/air/vacuum risers (All Floor) | 18d | 2011-09-05 A | 2011-10-01 | IAFAF22009C0, TRXCO05101C0 | 100% | 0d | 2011-09-15 | 2011-10-06 | 186.59d | 16.56d |  | Cost [46527.2 AED] | 46,527.25 | 16,284.54 | 1124 | 226 | TAFAF22009C0 | PT | C |  | AF | AF | ME | 220 | 09 | BILL 11 | B10 | S2 | RI | R00 | ACF04 | 220 | MEP |  |  | 10 | RI |
| TAFAF22011C0 |  | PT-AF ; Risers-Secondary Steel for Soil, waste & vent ris (All Floor) | 18d | 2011-09-05 A | 2011-10-08 | IAFAF22011C0, SAFAF22011C0, TRXCO05101C0 | 100% | 0d | 2011-09-10 | 2011-10-01 | 162.63d | 29.2d |  | Cost [211934 AED] | 211,933.9 | 74,176.87 | 1125 | 227 | TAFAF22011C0 | PT | C |  | AF | AF | ME | 220 | 11 | BILL 11 | B10 | S2 | RI | R00 | ACF04 | 220 | MEP |  |  | 10 | RI |
| TAFAF22013C0 |  | PT-AF ; Risers-Secondary Steel for Storm water drainage risers (All Floor) | 18d | 2011-09-05 A | 2011-10-04 | IAFAF22013C0, SAFAF22013C0, TRXCO05101C0 | 100% | 0d | 2011-09-10 | 2011-10-01 | 187.63d | 21d |  | Cost [23306 AED] | 23,306.05 | 2,330.61 | 1126 | 228 | TAFAF22013C0 | PT | C |  | AF | AF | ME | 220 | 13 | BILL 11 | B10 | S2 | RI | R00 | ACF04 | 220 | MEP |  |  |  | RI |
| TAFAF22017C0 |  | PT-AF ; Risers-Storm water drainage risers (All Floor) | 42d | 2011-09-05 A | 2011-12-18 | IAFAF22017C0, SAFAF22017C0, TAFAF22013C0 | 10% | 37.8d | 2011-10-06 | 2011-11-29 | 166.63d | 57.8d |  | PLUMBING [7846.8 h]; Cost [405525 AED] | 405,525.27 | 40,552.53 | 1126 | 1519 | TAFAF22017C0 | PT | C |  | AF | AF | ME | 220 | 17 | BILL 11 | B10 | S2 | RI | R00 | ACF04 | 220 | MEP |  |  |  | RI |
| TAFAF22019C0 |  | PT-AF ; Risers-Domestic cold water risers (All Floor) | 42d | 2011-09-05 A | 2012-02-09 | IAFAF22019C0, SAFAF22019C0, TAFAF22005C0 | 20% | 33.6d | 2011-11-30 | 2012-01-21 | 122.2d | 13.37d |  | PLUMBING [4700.4 h]; Cost [193802 AED] | 193,802.07 | 38,760.41 | 1122 | 1515 | TAFAF22019C0 | PT | C |  | AF | AF | ME | 220 | 19 | BILL 11 | B10 | S2 | RI | R00 | ACF04 | 220 | MEP |  |  | 10 | RI |
| TAFAF22021C0 |  | PT-AF ; Risers-Hot water risers (All Floor) | 42d | 2011-09-05 A | 2012-01-25 | IAFAF22021C0, SAFAF22021C0, TAFAF22007C0 | 20% | 33.6d | 2011-11-15 | 2012-01-07 | 134.2d | 25.37d |  | PLUMBING [2169.6 h]; Cost [112191 AED] | 112,190.85 | 22,438.17 | 1123 | 1516 | TAFAF22021C0 | PT | C |  | AF | AF | ME | 220 | 21 | BILL 11 | B10 | S2 | RI | R00 | ACF04 | 220 | MEP |  |  | 10 | RI |
| TAFAF22023C0 |  | PT-AF ; Risers-Soil, waste & vent risers (All Floor) | 66d | 2011-09-05 A | 2012-01-26 | IAFAF22023C0, SAFAF22023C0, TAFAF22011C0 | 10% | 59.4d | 2011-10-22 | 2012-01-14 | 133.43d | 24.6d |  | PLUMBING [71356.8 h]; Cost [3687650 AED] | 3,687,649.86 | 368,764.99 | 1125 | 1518 | TAFAF22023C0 | PT | C |  | AF | AF | ME | 220 | 23 | BILL 11 | B10 | S2 | RI | R00 | ACF04 | 220 | MEP |  |  |  | RI |
| TAFAF23025C0 |  | PT-AF ; Risers-Secondary Steel for Main Ducts (All Floor) | 18d | 2011-09-05 A | 2011-10-10 | IAFAF23025C0, SAFAF23025C0, TRXCO05101C0 | 100% | 0d | 2011-09-11 | 2011-10-02 | 160.99d | 8.06d |  | Cost [214975 AED] | 214,975.3 | 21,497.53 | 1127 | 229 | TAFAF23025C0 | PT | C |  | AF | AF | ME | 230 | 25 | BILL 11 | B10 | S2 | RI | R00 | ACF04 | 230 | MEP |  |  |  | RI |
| TAFAF23027C0 |  | PT-AF ; Risers-Secondary Steel for Chilled water & heat recovery pip (All Floor) | 18d | 2011-09-05 A | 2011-10-08 | IAFAF23027C0, SAFAF23027C0, TRXCO05101C0 | 100% | 0d | 2011-09-08 | 2011-09-29 | 168.03d | 0d |  | Cost [747779 AED] | 747,779.35 | 261,722.77 | 1128 | 230 | TAFAF23027C0 | PT | C |  | AF | AF | ME | 230 | 27 | BILL 11 | B10 | S2 | RI | R00 | ACF04 | 230 | MEP |  |  | 10 | RI |
| TAFAF23029C0 |  | PT-AF ; Risers-Chilled water & heat recovery pip (All Floor) | 72d | 2011-09-05 A | 2011-12-15 | TAFAF23027C0 | 25% | 54d | 2011-09-29 | 2011-12-28 | 168.03d | 59.2d |  | MECHANICAL [252032 h]; Cost [13011361 AED] | 13,011,360.69 | 3,252,840.17 | 1128 | 1521 | TAFAF23029C0 | PT | C |  | AF | AF | ME | 230 | 29 | BILL 11 | B10 | S2 | RI | R00 | ACF04 | 230 | MEP |  |  | 10 | RI |
| TAFAF23031C0 |  | PT-AF ; Risers-Risers - Main Ducts (All Floor) | 66d | 2011-09-05 A | 2012-01-03 | IAFAF23031C0, SAFAF23031C0, TAFAF23025C0 | 10% | 59.4d | 2011-10-02 | 2011-12-24 | 152.93d | 44.1d |  | MECHANICAL [75638.4 h]; Cost [3740570 AED] | 3,740,570.22 | 374,057.02 | 1127 | 1520 | TAFAF23031C0 | PT | C |  | AF | AF | ME | 230 | 31 | BILL 11 | B10 | S2 | RI | R00 | ACF04 | 230 | MEP |  |  |  | RI |
| TAFAF26033C0 |  | PT-AF ; Risers-Tray for High voltage cables (All Floor) | 42d | 2011-10-01 | 2011-11-22 | IAFAF26033C0, SAFAF26033C0, TRXCO05101C0 |  |  |  |  | 144.59d | 0d |  | ELECTRICAL [4339.2 h]; Cost |  |  | 1129 | 231 | TAFAF26033C0 | PT | C |  | AF | AF | ME | 260 | 33 | BILL 11 | B10 | S2 | MEL | R00 | ACF04 | 260 | MEP |  |  |  | RI |
| TAFAF21101C0 |  | PT-AF ; Risers-Secondary Steel for fire Suppression (All Floor) | 0d | 2011-10-02 | 2011-10-02 | IAFAF21101C0, SAFAF21101C0, TRXCO05101C0 |  |  |  |  | 185.13d | 0d |  | Cost |  |  | 1121 | 223 | TAFAF21101C0 | PT | C |  | AF | AF | ME | 211 | 01 | BILL 11 | B10 | S2 | RI | R00 | ACF04 | 211 | MEP |  |  |  | RI |
| TAFAF21103C0 |  | PT-AF ; Risers-Fire Suppression risers (All Floor) | 42d | 2011-10-02 | 2011-11-23 | TAFAF21101C0 |  |  |  |  | 185.13d | 76.3d |  | MECHANICAL [17505.6 h]; Cost |  |  | 1121 | 1514 | TAFAF21103C0 | PT | C |  | AF | AF | ME | 211 | 03 | BILL 11 | B10 | S2 | RI | R00 | ACF04 | 211 | MEP |  |  |  | RI |
| TAFAF22015C0 |  | PT-AF ; Risers-Medical Gas/air/vacuum risers (All Floor) | 42d | 2011-10-19 | 2011-12-13 | IAFAF22015C0, TAFAF22009C0 |  |  |  |  | 170.03d | 61.2d |  | PLUMBING [15679.2 h]; Cost |  |  | 1124 | 1517 | TAFAF22015C0 | PT | C |  | AF | AF | ME | 220 | 15 | BILL 11 | B10 | S2 | RI | R00 | ACF04 | 220 | MEP |  |  |  | RI |
| TAFAF26035C0 |  | PT-AF ; Risers-Tray for Low voltage cables (power, comm, (All Floor) | 42d | 2011-10-27 | 2011-12-21 | IAFAF26035C0, SAFAF26035C0, TRXCO05101C0 |  |  |  |  | 120.88d | 12.05d |  | ELECTRICAL [469.2 h]; Cost |  |  | 1130 | 232 | TAFAF26035C0 | PT | C |  | AF | AF | ME | 260 | 35 | BILL 11 | B10 | S2 | MEL | R00 | ACF04 | 260 | MEP |  |  |  | RI |
| TAFAF26037C0 |  | PT-AF ; Risers-Tray for ELV risers (All Floor) | 42d | 2011-11-05 | 2011-12-28 | IAFAF26037C0, SAFAF26037C0, TRXCO05101C0 |  |  |  |  | 156.83d | 48d |  | ELECTRICAL [6854.4 h]; Cost |  |  | 1132 | 233 | TAFAF26037C0 | PT | C |  | AF | AF | ME | 260 | 37 | BILL 11 | B10 | S2 | MEL | R00 | ACF04 | 260 | MEP |  |  |  | RI |
| TAFAF26039C0 |  | PT-AF ; Risers-High voltage cables (All Floor) | 42d | 2011-11-22 | 2012-01-14 | IAFAF26039C0, SAFAF26039C0, TAFAF26033C0 |  |  |  |  | 144.59d | 35.76d |  | ELECTRICAL [10944 h]; Cost |  |  | 1129 | 1522 | TAFAF26039C0 | PT | C |  | AF | AF | ME | 260 | 39 | BILL 11 | B10 | S2 | MEL | R00 | ACF04 | 260 | MEP |  |  |  | RI |
| TAFAF26041C0 |  | PT-AF ; Risers-ELV Cables (All Floor) | 42d | 2012-01-07 | 2012-02-25 | IAFAF26041C0, SAFAF26041C0, TAFAF21103C0 FF, TAFAF22015C0 FF, TAFAF22017C0 FF, TAFAF22019C0 FF, TAFAF22021C0 FF, TAFAF22023C0 FF, TAFAF23029C0 FF, TAFAF23031C0 FF, TAFAF26037C0 SS, TAFAF26043C0 FF |  |  |  |  | 108.83d | 0d |  | ELECTRICAL [3363.6 h]; Cost |  |  | 1132 | 1525 | TAFAF26041C0 | PT | C |  | AF | AF | ME | 260 | 41 | BILL 11 | B10 | S2 | MEL | R00 | ACF04 | 260 | MEP |  |  |  | RI |
| TAFAF26043C0 |  | PT-AF ; Risers-Lightning protection cables (All Floor) | 42d | 2012-01-07 | 2012-02-25 | IAFAF26043C0, SAFAF26043C0, T21CO03399C0 |  |  |  |  | 108.83d | 0d |  | ELECTRICAL [27798 h]; Cost |  |  | 1131 | 1524 | TAFAF26043C0 | PT | C |  | AF | AF | ME | 260 | 43 | BILL 11 | B10 | S2 | MEL | R00 | ACF04 | 260 | MEP |  |  |  | RI |
| TAFAF26045C0 |  | PT-AF ; Risers-Low voltage cables (power, comm, security) (All Floor) | 42d | 2012-01-07 | 2012-02-25 | IAFAF26045C0, SAFAF26045C0, TAFAF26035C0 |  |  |  |  | 108.83d | 0d |  | ELECTRICAL [35274 h]; Cost |  |  | 1130 | 1523 | TAFAF26045C0 | PT | C |  | AF | AF | ME | 260 | 45 | BILL 11 | B10 | S2 | MEL | R00 | ACF04 | 260 | MEP |  |  |  | RI |

| ID | WBS | Activity | Duration | Start | Finish | Predecessors | Total float | Free float | Resources | change id | CCAD BUILDING(SET) | CCAD PHASE(SET) | CCAD FLOOR(SET) | CCAD ZONE(SET) | CCAD WORK(SET) | CCAD SECTION(SET) | CCAD SERIAL No.(SET) | CCAD CBS(SET) | CCAD BILL(SET) | CCAD HANDOVER(SET) | CCAD TAG(SET) | CCAD REV(SET) | CCADACF (SET) | CCAD SSCF | No.of Wor Days | Duration/Differe | CCAD CSA | NEW ACTIVITY ID |
| --- | --- | --- | --- | --- | --- | --- | --- | --- | --- | --- | --- | --- | --- | --- | --- | --- | --- | --- | --- | --- | --- | --- | --- | --- | --- | --- | --- | --- |
|  | 10 | **Precommissioning Tesing & snagging** |  | 2012-02-26 | 2012-09-29 |  |  |  |  |  |  |  |  |  |  |  |  |  |  |  |  |  |  |  |  |  |  |  |
| TAFTS01801C0 |  | PT-AF ; MEP de-snag, FIREM sign-off | 12d | 2012-02-26 | 2012-03-10 | TAFAF26039C0, TAFAF26041C0, TAFAF26045C0 | 326.5d | 147d | TESTING & COMMISSIONING [1020 h]; Cost | TAFTS01801C0 | PT | C | AF | TS | SC | 018 | 01 | BILL 11 | B10 | S2 | 01 | R00 | ACF07 | 018 |  |  |  |  |
| TAFTS01802C0 |  | PT-AF ; Touch-up & Clean / JV inspection /CIR /De-snag | 18d | 2012-09-02 | 2012-09-22 | TAFAF26039C0, TAFAF26041C0, TAFAF26045C0, TAFTS01801C0, TEXCO04409C0, TEXCO04411C0, TEXCO04413C0, TRXCO05101C0, TVT3114247C0, TVT0114247C0, TVT0214247C0, TVT3214247C0, TVT3314247C0, TVT0714248C0, TVT0914248C0, TVT2614248C0 | 179.5d | 0d | TESTING & COMMISSIONING [170 h]; Cost | TAFTS01802C0 | PT | C | AF | TS | SC | 018 | 02 | BILL 11 | B10 | S2 | 02 | R00 | ACF07 | 018 |  |  |  |  |
| TAFTS01803C0 |  | PT-AF ; Consultant's final de-snag inspection | 5.5d | 2012-09-23 | 2012-09-29 | TAFTS01802C0 | 179.5d | 163.85d | Labor General [1 h]; Cost | TAFTS01803C0 | PT | C | AF | TS | SC | 018 | 03 | BILL 11 | B10 | S2 | 03 | R00 | ACF07 | 018 |  |  |  |  |
|  | VT | **Vertical Transpotation** |  | 2011-06-02 | 2013-02-20 |  |  |  |  |  |  |  |  |  |  |  |  |  |  |  |  |  |  |  |  |  |  |  |
|  | EL01 | **Lift (#01)** |  | 2012-04-01 | 2012-08-30 |  |  |  |  |  |  |  |  |  |  |  |  |  |  |  |  |  |  |  |  |  |  |  |
| TVT0114233C0 |  | PT-AF ; Ele(#01)- PT L1/ install temp. deck (Lift) | 3d | 2012-04-01 | 2012-04-03 | T21CO03399C0, GNHE08101C10 FS+213d | 56.38d | 0d | SERVICE LIFTS [1 h]; Cost | TVT0114233C0 | PT | C | VT | 01 | EL | 142 | 33 | BILL 11 | B11 | S2 | 29 | R00 | ACF11 | 142 | 123044096 | 117440512 | LE |  |
| TVT0114203C0 |  | PT-AF ; Ele(#01)- PT L1/ Fixing template, Plumbing & Install first rail (Lift) | 6.88d | 2012-04-04 | 2012-04-11 | TVT0114233C0 | 56.38d | 0d | SERVICE LIFTS [22 h]; Cost | TVT0114203C0 | PT | C | VT | 01 | EL | 142 | 03 | BILL 11 | B11 | S2 | 29 | R00 | ACF11 | 142 | 125059072 | 117440512 | LE |  |
| TVT0114207C0 |  | PT-AF ; Ele(#01)- PT L1/ Build false car (Lift) | 7d | 2012-04-11 | 2012-04-19 | TVT0114203C0 | 56.38d | 0d | SERVICE LIFTS [22 h]; Cost | TVT0114207C0 | PT | C | VT | 01 | EL | 142 | 07 | BILL 11 | B11 | S2 | 29 | R00 | ACF11 | 142 | 123044096 | 117440512 | LE |  |
| TVT0114209C0 |  | PT-AF ; Ele(#01)- PT L1/ Install brackets, rails & alignment (Lift) | 15d | 2012-04-19 | 2012-05-07 | TVT0114207C0 | 56.38d | 0d | SERVICE LIFTS [262 h]; Cost | TVT0114209C0 | PT | C | VT | 01 | EL | 142 | 09 | BILL 11 | B11 | S2 | 29 | R00 | ACF11 | 142 | 125059072 | 117440512 | LE |  |
| TVT0114211C0 |  | PT-AF ; Ele(#01)- PT L1/ Install Entrance frames & doors (Lift) | 15d | 2012-05-07 | 2012-05-24 | TVT0114209C0 | 56.38d | 0d | SERVICE LIFTS [202 h]; Cost | TVT0114211C0 | PT | C | VT | 01 | EL | 142 | 11 | BILL 11 | B11 | S2 | 29 | R00 | ACF11 | 142 | 123044096 | 117440512 | LE |  |
| TVT0114213C0 |  | PT-AF ; Ele(#01)- PT L1/ Install Machine & Controller (Lift) | 7d | 2012-05-24 | 2012-06-02 | TVT0114211C0 | 181.38d | 0d | SERVICE LIFTS [284 h]; Cost | TVT0114213C0 | PT | C | VT | 01 | EL | 142 | 13 | BILL 11 | B11 | S2 | 29 | R00 | ACF11 | 142 | 125059072 | 117440512 | LE |  |
| TVT0114215C0 |  | PT-AF ; Ele(#01)- PT L1/ Install Governor & rope (Lift) | 3d | 2012-06-02 | 2012-06-05 | TVT0114213C0 | 181.38d | 0d | SERVICE LIFTS [52 h]; Cost | TVT0114215C0 | PT | C | VT | 01 | EL | 142 | 15 | BILL 11 | B11 | S2 | 29 | R00 | ACF11 | 142 | 123044096 | 117440512 | LE |  |
| TVT0114217C0 |  | PT-AF ; Ele(#01)- PT L1/ install counterweight frame (Lift) | 4d | 2012-06-05 | 2012-06-10 | TVT0114215C0 | 181.38d | 0d | SERVICE LIFTS [52 h]; Cost | TVT0114217C0 | PT | C | VT | 01 | EL | 142 | 17 | BILL 11 | B11 | S2 | 29 | R00 | ACF11 | 142 | 125059072 | 117440512 | LE |  |
| TVT0114219C0 |  | PT-AF ; Ele(#01)- PT L1/ Hoistway truncking & Wiring (Lift) | 14.88d | 2012-06-10 | 2012-06-28 | TVT0114217C0 | 181.38d | 0d | SERVICE LIFTS [67 h]; Cost | TVT0114219C0 | PT | C | VT | 01 | EL | 142 | 19 | BILL 11 | B11 | S2 | 29 | R00 | ACF11 | 142 | 123044096 | 117440512 | LE |  |
| TVT0114221C0 |  | PT-AF ; Ele(#01)- PT L1/ Machine room wiring (Lift) | 7d | 2012-06-28 | 2012-07-07 | TVT0114219C0 | 181.38d | 0d | SERVICE LIFTS [15 h]; Cost | TVT0114221C0 | PT | C | VT | 01 | EL | 142 | 21 | BILL 11 | B11 | S2 | 29 | R00 | ACF11 | 142 | 125059072 | 117440512 | LE |  |
| TVT0114223C0 |  | PT-AF ; Ele(#01)- PT L1/ Build car frame (Lift) | 10d | 2012-07-07 | 2012-07-18 | TVT0114221C0 | 181.38d | 0d | SERVICE LIFTS [105 h]; Cost | TVT0114223C0 | PT | C | VT | 01 | EL | 142 | 23 | BILL 11 | B11 | S2 | 29 | R00 | ACF11 | 142 | 123044096 | 117440512 | LE |  |
| TVT0114225C0 |  | PT-AF ; Ele(#01)- PT L1/ Main roping (Lift) | 7d | 2012-07-18 | 2012-07-26 | TVT0114223C0 | 195.25d | 0d | SERVICE LIFTS [52 h]; Cost | TVT0114225C0 | PT | C | VT | 01 | EL | 142 | 25 | BILL 11 | B11 | S2 | 29 | R00 | ACF11 | 142 | 125059072 | 117440512 | LE |  |
| TVT0114231C0 |  | PT-AF ; Ele(#01)- PT L1/ Build cab & Wiring (Lift) | 29.88d | 2012-07-18 | 2012-08-25 | TVT0114223C0 | 181.38d | 0d | SERVICE LIFTS [97 h]; Cost | TVT0114231C0 | PT | C | VT | 01 | EL | 142 | 31 | BILL 11 | B11 | S2 | 29 | R00 | ACF11 | 142 | 123044096 | 117440512 | LE |  |
| TVT0114227C0 |  | PT-AF ; Ele(#01)- PT L1/ Loading counterweights (Lift) | 6d | 2012-07-26 | 2012-08-02 | TVT0114225C0 | 195.25d | 0d | SERVICE LIFTS [15 h]; Cost | TVT0114227C0 | PT | C | VT | 01 | EL | 142 | 27 | BILL 11 | B11 | S2 | 29 | R00 | ACF11 | 142 | 123044096 | 117440512 | LE |  |
| TVT0114229C0 |  | PT-AF ; Ele(#01)- PT L1/ Dismantling false car (Lift) | 3d | 2012-08-02 | 2012-08-06 | TVT0114227C0 | 195.25d | 13.88d | SERVICE LIFTS [7 h]; Cost | TVT0114229C0 | PT | C | VT | 01 | EL | 142 | 29 | BILL 11 | B11 | S2 | 29 | R00 | ACF11 | 142 | 125059072 | 117440512 | LE |  |
| TVT0114247C0 |  | PT-AF ; Ele(#01)- Inspection, Testing & Commis (Lift) | 4.5d | 2012-08-25 | 2012-08-30 | TVT0114229C0, TVT0114231C0 | 181.38d | 1.88d | SERVICE LIFTS [75 h]; Cost | CVT3914247C0 | PT | C | VT | 01 | EL | 142 | 47 | BILL 11 | B11 | S2 | 29 | R00 | ACF11 | 142 |  |  | LE | 1531 |
|  | EL02 | **Lift (#02~06)** |  | 2012-04-01 | 2012-08-30 |  |  |  |  |  |  |  |  |  |  |  |  |  |  |  |  |  |  |  |  |  |  |  |
| TVT0214233C0 |  | PT-AF ; Ele(#02~06)- PT L2/ Install temp. deck (Lift) | 3d | 2012-04-01 | 2012-04-03 | T21CO03399C0, GNHE08101C10 FS+213d | 56.38d | 0d | SERVICE LIFTS [1 h]; Cost | TVT0214233C0 | PT | C | VT | 02 | EL | 142 | 33 | BILL 11 | B11 | S2 | 28 | R00 | ACF11 | 142 | 125059072 | 117440512 | LE |  |
| TVT0214203C0 |  | PT-AF ; Ele(#02~06)- PT L2/ Fixing template, Plumbing & Install first rail (Lift) | 6.88d | 2012-04-04 | 2012-04-11 | TVT0214233C0 | 56.38d | 0d | SERVICE LIFTS [120 h]; Cost | TVT0214203C0 | PT | C | VT | 02 | EL | 142 | 03 | BILL 11 | B11 | S2 | 28 | R00 | ACF11 | 142 | 123044096 | 117440512 | LE |  |
| TVT0214207C0 |  | PT-AF ; Ele(#02~06)- PT L2/ Build false car (Lift) | 7d | 2012-04-11 | 2012-04-19 | TVT0214203C0 | 56.38d | 0d | SERVICE LIFTS [97 h]; Cost | TVT0214207C0 | PT | C | VT | 02 | EL | 142 | 07 | BILL 11 | B11 | S2 | 28 | R00 | ACF11 | 142 | 125059072 | 117440512 | LE |  |
| TVT0214209C0 |  | PT-AF ; Ele(#02~06)- PT L2/ Install brackets, rails & alignment (Lift) | 15d | 2012-04-19 | 2012-05-07 | TVT0214207C0 | 56.38d | 0d | SERVICE LIFTS [1324 h]; Cost | TVT0214209C0 | PT | C | VT | 02 | EL | 142 | 09 | BILL 11 | B11 | S2 | 28 | R00 | ACF11 | 142 | 123044096 | 117440512 | LE |  |
| TVT0214211C0 |  | PT-AF ; Ele(#02~06)- PT L2/ Install Entrance frames & doors (Lift) | 15d | 2012-05-07 | 2012-05-24 | TVT0214209C0 | 56.38d | 0d | SERVICE LIFTS [995 h]; Cost | TVT0214211C0 | PT | C | VT | 02 | EL | 142 | 11 | BILL 11 | B11 | S2 | 28 | R00 | ACF11 | 142 | 125059072 | 117440512 | LE |  |
| TVT0214213C0 |  | PT-AF ; Ele(#02~06)- PT L2/ Install Machine & Controller (Lift) | 7d | 2012-05-24 | 2012-06-02 | TVT0214211C0 | 181.38d | 0d | SERVICE LIFTS [1406 h]; Cost | TVT0214213C0 | PT | C | VT | 02 | EL | 142 | 13 | BILL 11 | B11 | S2 | 28 | R00 | ACF11 | 142 | 123044096 | 117440512 | LE |  |
| TVT0214215C0 |  | PT-AF ; Ele(#02~06)- PT L2/ Install Governor & rope (Lift) | 3d | 2012-06-02 | 2012-06-05 | TVT0214213C0 | 181.38d | 0d | SERVICE LIFTS [262 h]; Cost | TVT0214215C0 | PT | C | VT | 02 | EL | 142 | 15 | BILL 11 | B11 | S2 | 28 | R00 | ACF11 | 142 | 125059072 | 117440512 | LE |  |
| TVT0214217C0 |  | PT-AF ; Ele(#02~06)- PT L2/ Install counterweight frame (Lift) | 4d | 2012-06-05 | 2012-06-10 | TVT0214215C0 | 181.38d | 0d | SERVICE LIFTS [262 h]; Cost | TVT0214217C0 | PT | C | VT | 02 | EL | 142 | 17 | BILL 11 | B11 | S2 | 28 | R00 | ACF11 | 142 | 123044096 | 117440512 | LE |  |
| TVT0214219C0 |  | PT-AF ; Ele(#02~06)- PT L2/ Hoistway truncking & Wiring (Lift) | 14.88d | 2012-06-10 | 2012-06-28 | TVT0214217C0 | 181.38d | 0d | SERVICE LIFTS [329 h]; Cost | TVT0214219C0 | PT | C | VT | 02 | EL | 142 | 19 | BILL 11 | B11 | S2 | 28 | R00 | ACF11 | 142 | 125059072 | 117440512 | LE |  |
| TVT0214221C0 |  | PT-AF ; Ele(#02~06)- PT L2/ Machine room wiring (Lift) | 7d | 2012-06-28 | 2012-07-07 | TVT0214219C0 | 181.38d | 0d | SERVICE LIFTS [67 h]; Cost | TVT0214221C0 | PT | C | VT | 02 | EL | 142 | 21 | BILL 11 | B11 | S2 | 28 | R00 | ACF11 | 142 | 123044096 | 117440512 | LE |  |
| TVT0214223C0 |  | PT-AF ; Ele(#02~06)- PT L2/ Build car frame (Lift) | 10d | 2012-07-07 | 2012-07-18 | TVT0214221C0 | 181.38d | 0d | SERVICE LIFTS [531 h]; Cost | TVT0214223C0 | PT | C | VT | 02 | EL | 142 | 23 | BILL 11 | B11 | S2 | 28 | R00 | ACF11 | 142 | 125059072 | 117440512 | LE |  |
| TVT0214225C0 |  | PT-AF ; Ele(#02~06)- PT L2/ Main roping (Lift) | 7d | 2012-07-18 | 2012-07-26 | TVT0214223C0 | 195.25d | 0d | SERVICE LIFTS [262 h]; Cost | TVT0214225C0 | PT | C | VT | 02 | EL | 142 | 25 | BILL 11 | B11 | S2 | 28 | R00 | ACF11 | 142 | 123044096 | 117440512 | LE |  |
| TVT0214231C0 |  | PT-AF ; Ele(#02~06)- PT L2/ Build cab & Wiring (Lift) | 29.88d | 2012-07-18 | 2012-08-25 | TVT0214223C0 | 181.38d | 0d | SERVICE LIFTS [501 h]; Cost | TVT0214231C0 | PT | C | VT | 02 | EL | 142 | 31 | BILL 11 | B11 | S2 | 28 | R00 | ACF11 | 142 | 125059072 | 117440512 | LE |  |
| TVT0214227C0 |  | PT-AF ; Ele(#02~06)- PT L2/ Loading counterweights (Lift) | 6d | 2012-07-26 | 2012-08-02 | TVT0214225C0 | 195.25d | 0d | SERVICE LIFTS [67 h]; Cost | TVT0214227C0 | PT | C | VT | 02 | EL | 142 | 27 | BILL 11 | B11 | S2 | 28 | R00 | ACF11 | 142 | 125059072 | 117440512 | LE |  |
| TVT0214229C0 |  | PT-AF ; Ele(#02~06)- PT L2/ Dismantling false car (Lift) | 3d | 2012-08-02 | 2012-08-06 | TVT0214227C0 | 195.25d | 13.88d | SERVICE LIFTS [30 h]; Cost | TVT0214229C0 | PT | C | VT | 02 | EL | 142 | 29 | BILL 11 | B11 | S2 | 28 | R00 | ACF11 | 142 | 123044096 | 117440512 | LE |  |
| TVT0214247C0 |  | PT-AF ; Ele(#02~06)- Inspection, Testing & Commis (Lift) | 4.5d | 2012-08-25 | 2012-08-30 | TVT0214229C0, TVT0214231C0 | 181.38d | 1.88d | SERVICE LIFTS [367 h]; Cost | CVT3914247C0 | PT | C | VT | 02 | EL | 142 | 47 | BILL 11 | B11 | S2 | 28 | R00 | ACF11 | 142 |  |  | LE | 1531 |

| ID | WBS | Activity | Duration | Start | Finish | Predecessors | Total float | Free float | Constraint | Resources | change id | No.of Wor Days | CCAD BUILDING(SET) | CCAD PHASE(SET) | CCAD FLOOR(SET) | CCAD ZONE(SET) | CCAD WORK(SET) | CCAD SECTION(SET) | CCAD SERIAL No.(SET) | CCAD CBS(SET) | CCAD BILL(SET) | CCAD HANDOVER(SET) | CCAD TAG(SET) | CCAD REV(SET) | CCADACF (SET) | CCAD CSA | CCAD SSCF | Duration/Differe | U% | user_end_date3 | user_end_date4 | user_text4 | NEW ACTIVITY ID |
| --- | --- | --- | --- | --- | --- | --- | --- | --- | --- | --- | --- | --- | --- | --- | --- | --- | --- | --- | --- | --- | --- | --- | --- | --- | --- | --- | --- | --- | --- | --- | --- | --- | --- |
|  | EL07 | **Lift (#07~08)** |  | 2011-11-01 | 2012-09-01 |  |  |  |  |  |  |  |  |  |  |  |  |  |  |  |  |  |  |  |  |  |  |  |  |  |  |  |  |
| TVT0714233C0 |  | PT-AF ; Ele(#07~08)- Install temp. deck (Lift) | 3d | 2011-11-01 | 2011-11-03 | T20CO03399C0, GNHE08101C10 FS+61d | 50d | 0d |  | SERVICE LIFTS [15 h]; Cost | TVT0714233C0 | 123044096 | PT | C | VT | 07 | EL | 142 | 33 | BILL 11 | B11 | S2 | 27 | R00 | ACF11 | LE | 142 |  |  |  |  |  |  |
| TVT0714203C0 |  | PT-AF ; Ele(#07~08)- Fixing template, Plumbing & Install first rail (Lift) | 7d | 2011-11-05 | 2011-11-15 | BLZHC01591C0, TVT0714233C0 | 50d | 0d |  | SERVICE LIFTS [22 h]; Cost | TVT0714203C0 | 125058816 | PT | C | VT | 07 | EL | 142 | 03 | BILL 11 | B11 | S2 | 27 | R00 | ACF11 | LE | 142 |  |  |  |  |  |  |
| TVT0714207C0 |  | PT-AF ; Ele(#07~08)- Build false car (Lift) | 7d | 2011-11-16 | 2011-11-23 | TVT0714203C0 | 50d | 0d |  | SERVICE LIFTS [30 h]; Cost | TVT0714207C0 |  | PT | C | VT | 07 | EL | 142 | 07 | BILL 11 | B11 | S2 | 27 | R00 | ACF11 | LE | 142 |  |  |  |  |  |  |
| TVT0714209C0 |  | PT-AF ; Ele(#07~08)- Install brackets, rails & alignment (Lift) | 15d | 2011-11-24 | 2011-12-13 | TVT0714207C0 | 50d | 0d |  | SERVICE LIFTS [755 h]; Cost | TVT0714209C0 | 123044096 | PT | C | VT | 07 | EL | 142 | 09 | BILL 11 | B11 | S2 | 27 | R00 | ACF11 | LE | 142 | 117440512 |  |  |  |  |  |
| TVT0714211C0 |  | PT-AF ; Ele(#07~08)- Install Entrance frames & doors (Lift) | 15d | 2011-12-14 | 2011-12-31 | TVT0714209C0 | 50d | 0d |  | SERVICE LIFTS [561 h]; Cost | TVT0714211C0 | 125058816 | PT | C | VT | 07 | EL | 142 | 11 | BILL 11 | B11 | S2 | 27 | R00 | ACF11 | LE | 142 | 117440512 |  |  |  |  |  |
| TVT0714213C0 |  | PT-AF ; Ele(#07~08)- Install Machine & Controller (Lift) | 7d | 2012-01-02 | 2012-01-09 | TVT0714211C0 | 50d | 0d |  | SERVICE LIFTS [868 h]; Cost | TVT0714213C0 | 125058816 | PT | C | VT | 07 | EL | 142 | 13 | BILL 11 | B11 | S2 | 27 | R00 | ACF11 | LE | 142 | 117440512 | 0 |  |  |  |  |
| TVT0714215C0 |  | PT-AF ; Ele(#07~08)- Install Governor & rope (Lift) | 3d | 2012-01-10 | 2012-01-12 | TVT0714213C0 | 50d | 0d |  | SERVICE LIFTS [150 h]; Cost | TVT0714215C0 | 125058816 | PT | C | VT | 07 | EL | 142 | 15 | BILL 11 | B11 | S2 | 27 | R00 | ACF11 | LE | 142 |  |  |  |  |  |  |
| TVT0714217C0 |  | PT-AF ; Ele(#07~08)- Install counterweight frame (Lift) | 4d | 2012-01-14 | 2012-01-17 | TVT0714215C0 | 50d | 0d |  | SERVICE LIFTS [150 h]; Cost | TVT0714217C0 | 125058816 | PT | C | VT | 07 | EL | 142 | 17 | BILL 11 | B11 | S2 | 27 | R00 | ACF11 | LE | 142 | -16777216 |  | 2011-07-02 |  |  |  |
| TVT0714219C0 |  | PT-AF ; Ele(#07~08)- Hoistway truncking & Wiring (Lift) | 15d | 2012-01-18 | 2012-02-05 | TVT0714217C0 | 50d | 0d |  | SERVICE LIFTS [187 h]; Cost | TVT0714219C0 | 123044096 | PT | C | VT | 07 | EL | 142 | 19 | BILL 11 | B11 | S2 | 27 | R00 | ACF11 | LE | 142 |  |  | 2011-07-02 | 2011-07-04 | 100 |  |
| TVT0714221C0 |  | PT-AF ; Ele(#07~08)- Machine room wiring (Lift) | 7d | 2012-02-06 | 2012-02-13 | TVT0714219C0 | 50d | 0d |  | SERVICE LIFTS [37 h]; Cost | TVT0714221C0 |  | PT | C | VT | 07 | EL | 142 | 21 | BILL 11 | B11 | S2 | 27 | R00 | ACF11 | LE | 142 | 117440512 |  | 2011-07-05 | 2011-07-11 | 50 |  |
| TVT0714223C0 |  | PT-AF ; Ele(#07~08)- Build car frame (Lift) | 10d | 2012-02-14 | 2012-02-25 | TVT0714221C0 | 50d | 0d |  | SERVICE LIFTS [299 h]; Cost | TVT0714223C0 | 125058816 | PT | C | VT | 07 | EL | 142 | 23 | BILL 11 | B11 | S2 | 27 | R00 | ACF11 | LE | 142 | 117440512 |  | 2011-07-12 | 2011-07-18 |  |  |
| TVT0714225C0 |  | PT-AF ; Ele(#07~08)- Main roping (Lift) | 7d | 2012-02-26 | 2012-03-04 | TVT0714223C0 | 64d | 0d |  | SERVICE LIFTS [150 h]; Cost | TVT0714225C0 | -65536 | PT | C | VT | 07 | EL | 142 | 25 | BILL 11 | B11 | S2 | 27 | R00 | ACF11 | LE | 142 |  |  | 2011-07-19 | 2011-08-02 |  |  |
| TVT0714231C0 |  | PT-AF ; Ele(#07~08)- Build cab & Wiring (Lift) | 30d | 2012-02-26 | 2012-03-31 | TVT0714223C0 | 50d | 0d |  | SERVICE LIFTS [284 h]; Cost | TVT0714231C0 | 125058816 | PT | C | VT | 07 | EL | 142 | 31 | BILL 11 | B11 | S2 | 27 | R00 | ACF11 | LE | 142 |  |  |  |  |  |  |
| TVT0714227C0 |  | PT-AF ; Ele(#07~08)- Loading counterweights (Lift) | 6d | 2012-03-05 | 2012-03-11 | TVT0714225C0 | 64d | 0d |  | SERVICE LIFTS [37 h]; Cost | TVT0714227C0 | 125058816 | PT | C | VT | 07 | EL | 142 | 27 | BILL 11 | B11 | S2 | 27 | R00 | ACF11 | LE | 142 | -16777216 |  |  |  |  |  |
| TVT0714229C0 |  | PT-AF ; Ele(#07~08)- Dismantling false car (Lift) | 3d | 2012-03-12 | 2012-03-14 | TVT0714227C0 | 64d | 14d |  | SERVICE LIFTS [15 h]; Cost | TVT0714229C0 | 125058816 | PT | C | VT | 07 | EL | 142 | 29 | BILL 11 | B11 | S2 | 27 | R00 | ACF11 | LE | 142 |  |  |  |  |  |  |
| TVT0714247C0 |  | PT-AF ; Ele(#07~08)- Inspection, Testing & Commis (Lift) | 6d | 2012-04-01 | 2012-04-07 | TVT0714229C0, TVT0714231C0 | 50d | 0d |  | SERVICE LIFTS [209 h]; Cost | CVT3914247C0 |  | PT | C | VT | 07 | EL | 142 | 47 | BILL 11 | B11 | S2 | 27 | R00 | ACF11 | LE | 142 |  |  |  |  |  | 1531 |
| TVT0714248C0 |  | PT-AF ; Ele(#07~08)- Refurbishment | 39d | 2012-07-16 | 2012-09-01 | TVT0714247C0 | 179.5d | 0d | as late as possible | Labor General; Cost | CVT3914247C0 |  | PT | C | VT | 07 | EL | 142 | 47 | BILL 11 | B11 | S1 | 27 | R00 | ACF11 |  | 142 |  |  |  |  |  | 1531 |
|  | EL09 | **Lift (#09)** |  | 2011-11-01 | 2012-09-01 |  |  |  |  |  |  |  |  |  |  |  |  |  |  |  |  |  |  |  |  |  |  |  |  |  |  |  |  |
| TVT0914233C0 |  | PT-AF ; Ele(#09)- Install temp. deck (Lift) | 3d | 2011-11-01 | 2011-11-03 | T20CO03399C0, GNHE08101C10 FS+61d | 84d | 0d |  | SERVICE LIFTS [7 h]; Cost | TVT0914233C0 | 125058816 | PT | C | VT | 09 | EL | 142 | 33 | BILL 11 | B11 | S2 | 26 | R00 | ACF11 | LE | 142 |  |  | 2011-08-03 | 2011-08-05 |  |  |
| TVT0914239C0 |  | PT-AF ; Ele(#09)- Fixing template, plumbing (Lift) | 3d | 2011-11-05 | 2011-11-10 | TVT0914233C0 | 84d | 0d |  | SERVICE LIFTS [7 h]; Cost | TVT0914239C0 |  | PT | C | VT | 09 | EL | 142 | 39 | BILL 11 | B11 | S2 | 26 | R00 | ACF11 | LE | 142 |  |  |  |  |  |  |
| TVT0914241C0 |  | PT-AF ; Ele(#09)- Build false car (Lift) | 7d | 2011-11-12 | 2011-11-19 | TVT0914239C0 | 84d | 0d |  | SERVICE LIFTS [15 h]; Cost | TVT0914241C0 | 125058816 | PT | C | VT | 09 | EL | 142 | 41 | BILL 11 | B11 | S2 | 26 | R00 | ACF11 | LE | 142 | 117440512 |  |  |  |  |  |
| TVT0914243C0 |  | PT-AF ; Ele(#09)- Install brackets, rails & alignment (Lift) | 10d | 2011-11-20 | 2011-12-01 | TVT0914241C0 | 84d | 0d |  | SERVICE LIFTS [367 h]; Cost | TVT0914243C0 |  | PT | C | VT | 09 | EL | 142 | 43 | BILL 11 | B11 | S2 | 26 | R00 | ACF11 | LE | 142 | 117440512 |  |  |  |  |  |
| TVT0914245C0 |  | PT-AF ; Ele(#09)- Install Entrance frames & doors (Lift) | 10d | 2011-12-04 | 2011-12-14 | TVT0914243C0 | 84d | 0d |  | SERVICE LIFTS [277 h]; Cost | TVT0914245C0 | -65536 | PT | C | VT | 09 | EL | 142 | 45 | BILL 11 | B11 | S2 | 26 | R00 | ACF11 | LE | 142 | 117440512 |  |  |  |  |  |
| TVT0914213C0 |  | PT-AF ; Ele(#09)- Install Machine & Controller (Lift) | 7d | 2011-12-15 | 2011-12-22 | BLZHC01591C0, TVT0914245C0 | 84d | 0d |  | SERVICE LIFTS [426 h]; Cost | TVT0914213C0 | 125058816 | PT | C | VT | 09 | EL | 142 | 13 | BILL 11 | B11 | S2 | 26 | R00 | ACF11 | LE | 142 |  | 0 |  |  |  |  |
| TVT0914215C0 |  | PT-AF ; Ele(#09)- Install Governor & rope (Lift) | 3d | 2011-12-24 | 2011-12-26 | TVT0914213C0 | 84d | 0d |  | SERVICE LIFTS [75 h]; Cost | TVT0914215C0 | 125058816 | PT | C | VT | 09 | EL | 142 | 15 | BILL 11 | B11 | S2 | 26 | R00 | ACF11 | LE | 142 |  |  |  |  |  |  |
| TVT0914217C0 |  | PT-AF ; Ele(#09)- Install counterweight frame (Lift) | 4d | 2011-12-27 | 2011-12-31 | TVT0914215C0 | 84d | 0d |  | SERVICE LIFTS [75 h]; Cost | TVT0914217C0 | 123044096 | PT | C | VT | 09 | EL | 142 | 17 | BILL 11 | B11 | S2 | 26 | R00 | ACF11 | LE | 142 | 1593835520 |  | 2011-07-02 |  |  |  |
| TVT0914219C0 |  | PT-AF ; Ele(#09)- Hoistway truncking & Wiring (Lift) | 15d | 2012-01-02 | 2012-01-18 | TVT0914217C0 | 84d | 0d |  | SERVICE LIFTS [90 h]; Cost | TVT0914219C0 | 125058816 | PT | C | VT | 09 | EL | 142 | 19 | BILL 11 | B11 | S2 | 26 | R00 | ACF11 | LE | 142 |  |  | 2011-07-02 | 2011-07-04 | 100 |  |
| TVT0914221C0 |  | PT-AF ; Ele(#09)- Machine room wiring (Lift) | 7d | 2012-01-19 | 2012-01-26 | TVT0914219C0 | 84d | 0d |  | SERVICE LIFTS [15 h]; Cost | TVT0914221C0 | 125058816 | PT | C | VT | 09 | EL | 142 | 21 | BILL 11 | B11 | S2 | 26 | R00 | ACF11 | LE | 142 |  |  | 2011-07-05 | 2011-07-11 | 50 |  |
| TVT0914223C0 |  | PT-AF ; Ele(#09)- Build car frame (Lift) | 7d | 2012-01-28 | 2012-02-05 | TVT0914221C0 | 84d | 0d |  | SERVICE LIFTS [150 h]; Cost | TVT0914223C0 | 123044096 | PT | C | VT | 09 | EL | 142 | 23 | BILL 11 | B11 | S2 | 26 | R00 | ACF11 | LE | 142 | 117440512 |  | 2011-07-12 | 2011-07-18 |  |  |
| TVT0914225C0 |  | PT-AF ; Ele(#09)- Main roping (Lift) | 7d | 2012-02-06 | 2012-02-13 | TVT0914223C0 | 84d | 0d |  | SERVICE LIFTS [75 h]; Cost | TVT0914225C0 |  | PT | C | VT | 09 | EL | 142 | 25 | BILL 11 | B11 | S2 | 26 | R00 | ACF11 | LE | 142 |  |  | 2011-07-19 | 2011-08-02 |  |  |
| TVT0914231C0 |  | PT-AF ; Ele(#09)- Build cab & Wiring (Lift) | 10d | 2012-02-06 | 2012-02-16 | TVT0914223C0 | 87d | 3d |  | SERVICE LIFTS [135 h]; Cost | TVT0914231C0 | 125058816 | PT | C | VT | 09 | EL | 142 | 31 | BILL 11 | B11 | S2 | 26 | R00 | ACF11 | LE | 142 | 268435456 |  | 2011-07-02 |  |  |  |
| TVT0914227C0 |  | PT-AF ; Ele(#09)- Loading counterweights (Lift) | 3d | 2012-02-14 | 2012-02-16 | TVT0914225C0 | 84d | 0d |  | SERVICE LIFTS [15 h]; Cost | TVT0914227C0 | 538976256 | PT | C | VT | 09 | EL | 142 | 27 | BILL 11 | B11 | S2 | 26 | R00 | ACF11 | LE | 142 |  |  | 2011-09-02 | 2011-09-16 |  |  |
| TVT0914229C0 |  | PT-AF ; Ele(#09)- Dismantling false car (Lift) | 3d | 2012-02-18 | 2012-02-20 | TVT0914227C0 | 84d | 0d |  | SERVICE LIFTS [7 h]; Cost | TVT0914229C0 | 123044096 | PT | C | VT | 09 | EL | 142 | 29 | BILL 11 | B11 | S2 | 26 | R00 | ACF11 | LE | 142 |  |  | 2011-07-02 |  |  |  |
| TVT0914247C0 |  | PT-AF ; Ele(#09)- Inspection, Testing & Commis (Lift) | 6d | 2012-02-21 | 2012-02-27 | TVT0914229C0, TVT0914231C0 | 84d | 34d |  | SERVICE LIFTS [105 h]; Cost | CVT3914247C0 |  | PT | C | VT | 09 | EL | 142 | 47 | BILL 11 | B11 | S2 | 26 | R00 | ACF11 | LE | 142 |  |  |  |  |  | 1531 |
| TVT0914248C0 |  | PT-AF ; Ele(#09)- Refurbishment | 39d | 2012-07-16 | 2012-09-01 | TVT0914247C0 | 179.5d | 0d | as late as possible | Labor General; Cost | CVT3914247C0 |  | PT | C | VT | 09 | EL | 142 | 47 | BILL 11 | B11 | S1 | 26 | R00 | ACF11 |  | 142 |  |  |  |  |  | 1531 |

| ID | WBS | Activity | Duration | Start | Finish | Predecessors | Complete | Remaining | Planned start | Planned finish | Total float | Free float | Constraint | Resources | user_end_date3 | user_end_date4 | change id | No.of Wor Days | Duration/Differe | CCAD BUILDING(SET) | CCAD PHASE(SET) | CCAD FLOOR(SET) | CCAD ZONE(SET) | CCAD WORK(SET) | CCAD SECTION(SET) | CCAD SERIAL No.(SET) | CCAD CBS(SET) | CCAD BILL(SET) | CCAD HANDOVER(SET) | CCAD TAG(SET) | CCAD REV(SET) | CCADACF (SET) | CCAD CSA | CCAD SSCF | U% | user_text4 | NEW ACTIVITY ID | Claimed This Month | user_number8 | user_integer1 | user_integer2 | user_number7 | P_811 | P_711 |
| --- | --- | --- | --- | --- | --- | --- | --- | --- | --- | --- | --- | --- | --- | --- | --- | --- | --- | --- | --- | --- | --- | --- | --- | --- | --- | --- | --- | --- | --- | --- | --- | --- | --- | --- | --- | --- | --- | --- | --- | --- | --- | --- | --- | --- |
|  | EL10 | **Lift (#10~11)** |  | 2011-10-25 | 2013-02-20 |  |  |  |  |  |  |  |  |  |  |  |  |  |  |  |  |  |  |  |  |  |  |  |  |  |  |  |  |  |  |  |  |  |  |  |  |  |  |  |
| TVT1014233C0 |  | PT-AF ; Ele(#10~11)- Install temp. deck (Lift) | 3d | 2011-10-25 | 2011-10-27 | T21CO03399C0, GNHE08101C10 FS+54d |  |  |  |  | 90d | 0d |  | SERVICE LIFTS [15 h]; Cost | 2011-08-03 | 2011-08-05 | TVT1014233C0 | 125059072 | 117440512 | PT | C | VT | 10 | EL | 142 | 33 | BILL 11 | B11 | S2 | 25 | R00 | ACF11 | LE | 142 |  |  |  |  |  |  |  |  |  |  |
| TVT1014239C0 |  | PT-AF ; Ele(#10~11)- Fixing template, plumbing (Lift) | 3d | 2011-10-29 | 2011-10-31 | TVT1014233C0 |  |  |  |  | 90d | 0d |  | SERVICE LIFTS [22 h]; Cost |  |  | TVT1014239C0 | 123044096 | 117440512 | PT | C | VT | 10 | EL | 142 | 39 | BILL 11 | B11 | S2 | 25 | R00 | ACF11 | LE | 142 |  |  |  |  |  |  |  |  |  |  |
| TVT1014241C0 |  | PT-AF ; Ele(#10~11)- Build false car (Lift) | 7d | 2011-11-01 | 2011-11-12 | TVT1014239C0 |  |  |  |  | 90d | 0d |  | SERVICE LIFTS [30 h]; Cost |  |  | TVT1014241C0 | 125059072 | 117440512 | PT | C | VT | 10 | EL | 142 | 41 | BILL 11 | B11 | S2 | 25 | R00 | ACF11 | LE | 142 |  |  |  |  |  |  |  |  |  |  |
| TVT1014243C0 |  | PT-AF ; Ele(#10~11)- Install brackets, rails & alignment (Lift) | 10d | 2011-11-13 | 2011-11-23 | TVT1014241C0 |  |  |  |  | 90d | 0d |  | SERVICE LIFTS [778 h]; Cost |  |  | TVT1014243C0 | 123044096 | 117440512 | PT | C | VT | 10 | EL | 142 | 43 | BILL 11 | B11 | S2 | 25 | R00 | ACF11 | LE | 142 |  |  |  |  |  |  |  |  |  |  |
| TVT1014245C0 |  | PT-AF ; Ele(#10~11)- Install Entrance frames & doors (Lift) | 10d | 2011-11-24 | 2011-12-07 | TVT1014243C0 |  |  |  |  | 90d | 0d |  | SERVICE LIFTS [583 h]; Cost |  |  | TVT1014245C0 | 125059072 | 117440512 | PT | C | VT | 10 | EL | 142 | 45 | BILL 11 | B11 | S2 | 25 | R00 | ACF11 | LE | 142 |  |  |  |  |  |  |  |  |  |  |
| TVT1014213C0 |  | PT-AF ; Ele(#10~11)- Install Machine & Controller (Lift) | 7d | 2011-12-08 | 2011-12-15 | BLZHC01591C0, TVT1014245C0 |  |  |  |  | 90d | 0d |  | SERVICE LIFTS [898 h]; Cost |  |  | TVT1014213C0 | 123044096 | 117440512 | PT | C | VT | 10 | EL | 142 | 13 | BILL 11 | B11 | S2 | 25 | R00 | ACF11 | LE | 142 | 0 |  |  |  |  |  |  |  |  |  |
| TVT1014215C0 |  | PT-AF ; Ele(#10~11)- Install Governor & rope (Lift) | 3d | 2011-12-17 | 2011-12-19 | TVT1014213C0 |  |  |  |  | 90d | 0d |  | SERVICE LIFTS [157 h]; Cost |  |  | TVT1014215C0 | 125059072 | 117440512 | PT | C | VT | 10 | EL | 142 | 15 | BILL 11 | B11 | S2 | 25 | R00 | ACF11 | LE | 142 |  |  |  |  |  |  |  |  |  |  |
| TVT1014217C0 |  | PT-AF ; Ele(#10~11)- Install counterweight frame (Lift) | 4d | 2011-12-20 | 2011-12-24 | TVT1014215C0 |  |  |  |  | 90d | 0d |  | SERVICE LIFTS [157 h]; Cost | 2011-07-02 |  | TVT1014217C0 | 123044096 | 117440512 | PT | C | VT | 10 | EL | 142 | 17 | BILL 11 | B11 | S2 | 25 | R00 | ACF11 | LE | 142 |  |  |  |  |  |  |  |  |  |  |
| TVT1014219C0 |  | PT-AF ; Ele(#10~11)- Hoistway truncking & Wiring (Lift) | 15d | 2011-12-25 | 2012-01-11 | TVT1014217C0 |  |  |  |  | 90d | 0d |  | SERVICE LIFTS [194 h]; Cost | 2011-07-02 | 2011-07-04 | TVT1014219C0 | 125059072 | 117440512 | PT | C | VT | 10 | EL | 142 | 19 | BILL 11 | B11 | S2 | 25 | R00 | ACF11 | LE | 142 |  | 100 |  |  |  |  |  |  |  |  |
| TVT1014221C0 |  | PT-AF ; Ele(#10~11)- Machine room wiring (Lift) | 7d | 2012-01-12 | 2012-01-19 | TVT1014219C0 |  |  |  |  | 90d | 0d |  | SERVICE LIFTS [37 h]; Cost | 2011-07-05 | 2011-07-11 | TVT1014221C0 | 123044096 | 117440512 | PT | C | VT | 10 | EL | 142 | 21 | BILL 11 | B11 | S2 | 25 | R00 | ACF11 | LE | 142 |  | 50 |  |  |  |  |  |  |  |  |
| TVT1014223C0 |  | PT-AF ; Ele(#10~11)- Build car frame (Lift) | 7d | 2012-01-21 | 2012-01-28 | TVT1014221C0 |  |  |  |  | 90d | 0d |  | SERVICE LIFTS [314 h]; Cost | 2011-07-12 | 2011-07-18 | TVT1014223C0 | 125059072 | 117440512 | PT | C | VT | 10 | EL | 142 | 23 | BILL 11 | B11 | S2 | 25 | R00 | ACF11 | LE | 142 |  |  |  |  |  |  |  |  |  |  |
| TVT1014225C0 |  | PT-AF ; Ele(#10~11)- Main roping (Lift) | 7d | 2012-01-29 | 2012-02-06 | TVT1014223C0 |  |  |  |  | 90d | 0d |  | SERVICE LIFTS [157 h]; Cost | 2011-07-19 | 2011-08-02 | TVT1014225C0 | 123044096 | 117440512 | PT | C | VT | 10 | EL | 142 | 25 | BILL 11 | B11 | S2 | 25 | R00 | ACF11 | LE | 142 |  |  |  |  |  |  |  |  |  |  |
| TVT1014231C0 |  | PT-AF ; Ele(#10~11)- Build cab & Wiring (Lift) | 10d | 2012-01-29 | 2012-02-09 | TVT1014223C0 |  |  |  |  | 93d | 3d |  | SERVICE LIFTS [292 h]; Cost | 2011-07-02 |  | TVT1014231C0 | 125059072 | 117440512 | PT | C | VT | 10 | EL | 142 | 31 | BILL 11 | B11 | S2 | 25 | R00 | ACF11 | LE | 142 |  |  |  |  |  |  |  |  |  |  |
| TVT1014227C0 |  | PT-AF ; Ele(#10~11)- Loading counterweights (Lift) | 3d | 2012-02-07 | 2012-02-09 | TVT1014225C0 |  |  |  |  | 90d | 0d |  | SERVICE LIFTS [37 h]; Cost | 2011-09-02 | 2011-09-16 | TVT1014227C0 | 125059072 | 117440512 | PT | C | VT | 10 | EL | 142 | 27 | BILL 11 | B11 | S2 | 25 | R00 | ACF11 | LE | 142 |  |  |  |  |  |  |  |  |  |  |
| TVT1014229C0 |  | PT-AF ; Ele(#10~11)- Dismantling false car (Lift) | 3d | 2012-02-11 | 2012-02-13 | TVT1014227C0 |  |  |  |  | 90d | 0d |  | SERVICE LIFTS [15 h]; Cost | 2011-07-02 |  | TVT1014229C0 | 123044096 | 117440512 | PT | C | VT | 10 | EL | 142 | 29 | BILL 11 | B11 | S2 | 25 | R00 | ACF11 | LE | 142 |  |  |  |  |  |  |  |  |  |  |
| TVT1014247C0 |  | PT-AF ; Ele(#10~11)- Inspection, Testing & Commis (Lift) | 6d | 2012-02-14 | 2012-02-20 | TVT1014229C0, TVT1014231C0 |  |  |  |  | 90d | 40d |  | SERVICE LIFTS [217 h]; Cost |  |  | CVT3914247C0 |  |  | PT | C | VT | 10 | EL | 142 | 47 | BILL 11 | B11 | S2 | 25 | R00 | ACF11 | LE | 142 |  |  | 1531 |  |  |  |  |  |  |  |
| TVT1014248C0 |  | PT-AF ; Ele(#10~11)- Refurbishment | 35d | 2013-01-10 | 2013-02-20 | TVTLT09611C0 FF, TVTLT09612C0 FF |  |  |  |  | 9d | 0d | as late as possible | Labor General [1 h]; Cost |  |  | CVT3914247C0 |  |  | PT | C | VT | 10 | EL | 142 | 47 | BILL 11 | B11 | S2 | 25 | R00 | ACF11 | LE | 142 |  |  | 1531 |  |  |  |  |  |  |  |
|  | EL12 | **Lift (#12~13)** |  | 2011-06-02 | 2013-02-20 |  |  |  |  |  |  |  |  |  |  |  |  |  |  |  |  |  |  |  |  |  |  |  |  |  |  |  |  |  |  |  |  |  |  |  |  |  |  |  |
| TVT1214233C0 |  | PT-AF ; Ele(#12~13)- Install temp. deck (Lift) | 3d | 2011-06-02 A | 2011-06-30 A | T10CO03399C0 | 100% |  | 2011-08-14 | 2011-08-17 |  |  |  | SERVICE LIFTS [22 h]; Cost | 2011-07-22 | 2011-07-31 | IVT1214233C0 | 123044096 | 117440512 | PT | C | VT | 12 | EL | 142 | 33 | BILL 11 | B11 | S2 | 24 | R00 | ACF11 | LE | 142 |  |  |  | 18101.74 |  |  |  |  |  |  |
| TVT1214213C0 |  | PT-AF ; Ele(#12~13)- Install Machine & Controller (Lift) | 7d | 2011-07-05 A | 2011-10-24 | TVT1214211C0 | 95% | 0.35d | 2011-10-10 | 2011-10-17 | 108.78d | 0d |  | SERVICE LIFTS [1616 h]; Cost |  |  | IVT1214213C0 | 125059072 | 117440512 | PT | C | VT | 12 | EL | 142 | 13 | BILL 11 | B11 | S2 | 24 | R00 | ACF11 | LE | 142 | 95 |  |  |  | 0 | 0 | 0 | 0 | 80 | 50 |
| TVT1214203C0 |  | PT-AF ; Ele(#12~13)- Fixing template, Plumbing & Install first rail (Lift) | 10d | 2011-09-05 A | 2011-09-29 A | TVT1214233C0 | 100% |  | 2011-09-01 | 2011-09-12 |  |  |  | SERVICE LIFTS [45 h]; Cost |  |  | IVT1214203C0 | 125059072 | 117440512 | PT | C | VT | 12 | EL | 142 | 03 | BILL 11 | B11 | S2 | 24 | R00 | ACF11 | LE | 142 | 100 |  |  |  |  |  |  |  |  |  |
| TVT1214207C0 |  | PT-AF ; Ele(#12~13)- Build false car (Lift) | 7d | 2011-09-05 A | 2011-09-29 A | TVT1214203C0 | 100% |  | 2011-09-13 | 2011-09-20 |  |  |  | SERVICE LIFTS [52 h]; Cost |  |  | IVT1214207C0 | 123044096 | 117440512 | PT | C | VT | 12 | EL | 142 | 07 | BILL 11 | B11 | S2 | 24 | R00 | ACF11 | LE | 142 | 100 |  |  |  |  |  |  |  |  |  |
| TVT1214209C0 |  | PT-AF ; Ele(#12~13)- Install brackets, rails & alignment (Lift) | 10d | 2011-10-01 | 2011-10-11 | TVT1214207C0 |  |  |  |  | 108.78d | 0d |  | SERVICE LIFTS [1406 h]; Cost |  |  | IVT1214209C0 | 125059072 | 117440512 | PT | C | VT | 12 | EL | 142 | 09 | BILL 11 | B11 | S2 | 24 | R00 | ACF11 | LE | 142 |  |  |  |  |  |  |  |  |  |  |
| TVT1214211C0 |  | PT-AF ; Ele(#12~13)- Install Entrance frames & doors (Lift) | 10d | 2011-10-12 | 2011-10-23 | TVT1214209C0 |  |  |  |  | 108.78d | 0d |  | SERVICE LIFTS [1055 h]; Cost |  |  | IVT1214211C0 | 123044096 | 117440512 | PT | C | VT | 12 | EL | 142 | 11 | BILL 11 | B11 | S2 | 24 | R00 | ACF11 | LE | 142 |  |  |  |  |  |  |  |  |  |  |
| TVT1214215C0 |  | PT-AF ; Ele(#12~13)- Install Governor & rope (Lift) | 3.12d | 2011-10-24 | 2011-10-27 | TVT1214213C0 |  |  |  |  | 108.78d | 0d |  | SERVICE LIFTS [284 h]; Cost |  |  | IVT1214215C0 | 123044096 | 117440512 | PT | C | VT | 12 | EL | 142 | 15 | BILL 11 | B11 | S2 | 24 | R00 | ACF11 | LE | 142 |  |  |  |  |  |  |  |  |  |  |
| TVT1214217C0 |  | PT-AF ; Ele(#12~13)- Install counterweight frame (Lift) | 2.88d | 2011-10-27 | 2011-10-31 | TVT1214215C0 |  |  |  |  | 108.78d | 0d |  | SERVICE LIFTS [284 h]; Cost |  |  | IVT1214217C0 | 125059072 | 117440512 | PT | C | VT | 12 | EL | 142 | 17 | BILL 11 | B11 | S2 | 24 | R00 | ACF11 | LE | 142 |  |  |  |  |  |  |  |  |  |  |
| TVT1214219C0 |  | PT-AF ; Ele(#12~13)- Hoistway truncking & Wiring (Lift) | 10.12d | 2011-10-31 | 2011-11-15 | TVT1214217C0 |  |  |  |  | 108.78d | 0d |  | SERVICE LIFTS [352 h]; Cost |  |  | IVT1214219C0 | 123044096 | 117440512 | PT | C | VT | 12 | EL | 142 | 19 | BILL 11 | B11 | S2 | 24 | R00 | ACF11 | LE | 142 |  |  |  |  |  |  |  |  |  |  |
| TVT1214221C0 |  | PT-AF ; Ele(#12~13)- Machine room wiring (Lift) | 5d | 2011-11-15 | 2011-11-21 | TVT1214219C0 |  |  |  |  | 108.78d | 0d |  | SERVICE LIFTS [67 h]; Cost |  |  | IVT1214221C0 | 125059072 | 117440512 | PT | C | VT | 12 | EL | 142 | 21 | BILL 11 | B11 | S2 | 24 | R00 | ACF11 | LE | 142 |  |  |  |  |  |  |  |  |  |  |
| TVT1214223C0 |  | PT-AF ; Ele(#12~13)- Build car frame (Lift) | 6d | 2011-11-21 | 2011-11-29 | TVT1214221C0 |  |  |  |  | 108.78d | 0d |  | SERVICE LIFTS [561 h]; Cost |  |  | IVT1214223C0 | 123044096 | 117440512 | PT | C | VT | 12 | EL | 142 | 23 | BILL 11 | B11 | S2 | 24 | R00 | ACF11 | LE | 142 |  |  |  |  |  |  |  |  |  |  |
| TVT1214225C0 |  | PT-AF ; Ele(#12~13)- Main roping (Lift) | 5d | 2011-11-29 | 2011-12-06 | TVT1214223C0 |  |  |  |  | 128.78d | 0d |  | SERVICE LIFTS [284 h]; Cost | 2011-07-02 |  | IVT1214225C0 | 125059072 | 117440512 | PT | C | VT | 12 | EL | 142 | 25 | BILL 11 | B11 | S2 | 24 | R00 | ACF11 | LE | 142 |  |  |  |  |  |  |  |  |  |  |
| TVT1214231C0 |  | PT-AF ; Ele(#12~13)- Build cab & Wiring (Lift) | 30d | 2011-11-29 | 2012-01-05 | TVT1214223C0 |  |  |  |  | 108.78d | 0d |  | SERVICE LIFTS [524 h]; Cost | 2011-07-15 | 2011-07-21 | IVT1214231C0 | 123044096 | 117440512 | PT | C | VT | 12 | EL | 142 | 31 | BILL 11 | B11 | S2 | 24 | R00 | ACF11 | LE | 142 |  |  |  |  |  |  |  |  |  |  |
| TVT1214227C0 |  | PT-AF ; Ele(#12~13)- Loading counterweights (Lift) | 3d | 2011-12-06 | 2011-12-10 | TVT1214225C0 |  |  |  |  | 128.78d | 0d |  | SERVICE LIFTS [67 h]; Cost | 2011-07-02 | 2011-07-04 | IVT1214227C0 | 123044096 | 117440512 | PT | C | VT | 12 | EL | 142 | 27 | BILL 11 | B11 | S2 | 24 | R00 | ACF11 | LE | 142 |  | 100 |  |  |  |  |  |  |  |  |
| TVT1214229C0 |  | PT-AF ; Ele(#12~13)- Dismantling false car (Lift) | 2d | 2011-12-10 | 2011-12-12 | TVT1214227C0 |  |  |  |  | 128.78d | 20d |  | SERVICE LIFTS [30 h]; Cost | 2011-07-05 | 2011-07-14 | IVT1214229C0 | 125059072 | 117440512 | PT | C | VT | 12 | EL | 142 | 29 | BILL 11 | B11 | S2 | 24 | R00 | ACF11 | LE | 142 |  | 50 |  |  |  |  |  |  |  |  |
| TVT1214247C0 |  | PT-AF ; Ele(#12~13)- Inspection, Testing & Commis (Lift) | 6d | 2012-01-05 | 2012-01-12 | TVT1214229C0, TVT1214231C0 |  |  |  |  | 108.78d | 0.03d |  | SERVICE LIFTS [389 h]; Cost |  |  | CVT3914247C0 |  |  | PT | C | VT | 12 | EL | 142 | 47 | BILL 11 | B11 | S2 | 24 | R00 | ACF11 | LE | 142 |  |  | 1531 |  |  |  |  |  |  |  |
| TVT1214248C0 |  | PT-AF ; Ele(#12~13)- Refurbishment | 35d | 2013-01-10 | 2013-02-20 | TVT1214247C0 |  |  |  |  | 9d | 0d | as late as possible | Labor General; Cost |  |  | CVT3914247C0 |  |  | PT | C | VT | 12 | EL | 142 | 47 | BILL 11 | B11 | S1 | 24 | R00 | ACF11 |  | 142 |  |  | 1531 |  |  |  |  |  |  |  |

| ID | WBS | Activity | Duration | Start | Finish | Predecessors | Complete | Remaining | Planned start | Planned finish | Total float | Free float | Constraint | Resources | change id | No.of Wor Days | Duration/Differe | U% | CCAD BUILDING(SET) | CCAD PHASE(SET) | CCAD FLOOR(SET) | CCAD ZONE(SET) | CCAD WORK(SET) | CCAD SECTION(SET) | CCAD SERIAL No.(SET) | CCAD CBS(SET) | CCAD BILL(SET) | CCAD HANDOVER(SET) | CCAD TAG(SET) | CCAD REV(SET) | CCADACF (SET) | CCAD CSA | CCAD SSCF | user_end_date3 | user_end_date4 | user_text4 | NEW ACTIVITY ID | Claimed This Month | P_811 | P_711 |
| --- | --- | --- | --- | --- | --- | --- | --- | --- | --- | --- | --- | --- | --- | --- | --- | --- | --- | --- | --- | --- | --- | --- | --- | --- | --- | --- | --- | --- | --- | --- | --- | --- | --- | --- | --- | --- | --- | --- | --- | --- |
|  | EL24 | **Lift (#24)** |  | 2011-09-07 | 2013-02-20 |  |  |  |  |  |  |  |  |  |  |  |  |  |  |  |  |  |  |  |  |  |  |  |  |  |  |  |  |  |  |  |  |  |  |  |
| TVT2414213C0 |  | PT-AF ; Ele(#24)- Install Machine & Controller (Lift) | 7d | 2011-09-07 A | 2011-12-22 | BLZHC01590C0, TVT2414245C0 | 80% | 1.4d | 2011-12-07 | 2011-12-14 | 19.24d | 0d |  | SERVICE LIFTS [1287 h]; Cost | TVT2414213C0 | 125059072 | 117440512 | 80 | PT | C | VT | 24 | EL | 142 | 13 | BILL 11 | B11 | S2 | 19 | R00 | ACF11 | LE | 142 |  |  |  |  |  |  |  |
| TVT2414233C0 |  | PT-AF ; Ele(#24)- Install temp. deck (Lift) | 3d | 2011-10-15 | 2011-10-17 | T21CO03399C0, GNHE08101C10 FS+44d |  |  |  |  | 19.24d | 0d |  | SERVICE LIFTS [15 h]; Cost | TVT2414233C0 | 123044096 | 117440512 |  | PT | C | VT | 24 | EL | 142 | 33 | BILL 11 | B11 | S2 | 19 | R00 | ACF11 | LE | 142 | 2011-07-19 | 2011-08-02 |  |  |  |  |  |
| TVT2414239C0 |  | PT-AF ; Ele(#24)- Fixing template, plumbing (Lift) | 3d | 2011-10-18 | 2011-10-20 | TVT2414233C0 |  |  |  |  | 19.24d | 0d |  | SERVICE LIFTS [30 h]; Cost | TVT2414239C0 | 125059072 | 117440512 |  | PT | C | VT | 24 | EL | 142 | 39 | BILL 11 | B11 | S2 | 19 | R00 | ACF11 | LE | 142 | 2011-07-02 |  |  |  |  |  |  |
| TVT2414241C0 |  | PT-AF ; Ele(#24)- Build false car (Lift) | 7d | 2011-10-22 | 2011-10-29 | TVT2414239C0 |  |  |  |  | 19.24d | 0d |  | SERVICE LIFTS [37 h]; Cost | TVT2414241C0 | 123044096 | 117440512 |  | PT | C | VT | 24 | EL | 142 | 41 | BILL 11 | B11 | S2 | 19 | R00 | ACF11 | LE | 142 | 2011-08-03 | 2011-08-05 |  |  |  |  |  |
| TVT2414243C0 |  | PT-AF ; Ele(#24)- Install brackets, rails & alignment (Lift) | 20d | 2011-10-30 | 2011-11-24 | TVT2414241C0 |  |  |  |  | 19.24d | 0d |  | SERVICE LIFTS [1122 h]; Cost | TVT2414243C0 | 125059072 | 117440512 |  | PT | C | VT | 24 | EL | 142 | 43 | BILL 11 | B11 | S2 | 19 | R00 | ACF11 | LE | 142 | 2011-08-06 | 2011-08-12 |  |  |  |  |  |
| TVT2414245C0 |  | PT-AF ; Ele(#24)- Install Entrance frames & doors (Lift) | 20d | 2011-11-27 | 2011-12-20 | TVT2414243C0 |  |  |  |  | 19.24d | 0d |  | SERVICE LIFTS [838 h]; Cost | TVT2414245C0 | 123044096 | 117440512 |  | PT | C | VT | 24 | EL | 142 | 45 | BILL 11 | B11 | S2 | 19 | R00 | ACF11 | LE | 142 | 2011-08-13 | 2011-09-01 |  |  |  |  |  |
| TVT2414215C0 |  | PT-AF ; Ele(#24)- Install Governor & rope (Lift) | 3d | 2011-12-22 | 2011-12-26 | TVT2414213C0 |  |  |  |  | 19.24d | 0d |  | SERVICE LIFTS [224 h]; Cost | TVT2414215C0 | 123044096 | 117440512 |  | PT | C | VT | 24 | EL | 142 | 15 | BILL 11 | B11 | S2 | 19 | R00 | ACF11 | LE | 142 |  |  |  |  |  |  |  |
| TVT2414217C0 |  | PT-AF ; Ele(#24)- Install counterweight frame (Lift) | 4d | 2011-12-26 | 2011-12-31 | TVT2414215C0 |  |  |  |  | 19.24d | 0d |  | SERVICE LIFTS [224 h]; Cost | TVT2414217C0 | 125059072 | 117440512 |  | PT | C | VT | 24 | EL | 142 | 17 | BILL 11 | B11 | S2 | 19 | R00 | ACF11 | LE | 142 |  |  |  |  |  |  |  |
| TVT2414219C0 |  | PT-AF ; Ele(#24)- Hoistway truncking & Wiring (Lift) | 15d | 2011-12-31 | 2012-01-18 | TVT2414217C0 |  |  |  |  | 19.24d | 0d |  | SERVICE LIFTS [277 h]; Cost | TVT2414219C0 | 123044096 | 117440512 |  | PT | C | VT | 24 | EL | 142 | 19 | BILL 11 | B11 | S2 | 19 | R00 | ACF11 | LE | 142 |  |  |  |  |  |  |  |
| TVT2414221C0 |  | PT-AF ; Ele(#24)- Machine room wiring (Lift) | 7d | 2012-01-18 | 2012-01-26 | TVT2414219C0 |  |  |  |  | 19.24d | 0d |  | SERVICE LIFTS [52 h]; Cost | TVT2414221C0 | 125059072 | 117440512 |  | PT | C | VT | 24 | EL | 142 | 21 | BILL 11 | B11 | S2 | 19 | R00 | ACF11 | LE | 142 |  |  |  |  |  |  |  |
| TVT2414223C0 |  | PT-AF ; Ele(#24)- Build car frame (Lift) | 7d | 2012-01-26 | 2012-02-05 | TVT2414221C0 |  |  |  |  | 19.24d | 0d |  | SERVICE LIFTS [449 h]; Cost | TVT2414223C0 | 123044096 | 117440512 |  | PT | C | VT | 24 | EL | 142 | 23 | BILL 11 | B11 | S2 | 19 | R00 | ACF11 | LE | 142 |  |  |  |  |  |  |  |
| TVT2414225C0 |  | PT-AF ; Ele(#24)- Main roping (Lift) | 7d | 2012-02-05 | 2012-02-13 | TVT2414223C0 |  |  |  |  | 21.24d | 0d |  | SERVICE LIFTS [224 h]; Cost | TVT2414225C0 | 125059072 | 117440512 |  | PT | C | VT | 24 | EL | 142 | 25 | BILL 11 | B11 | S2 | 19 | R00 | ACF11 | LE | 142 | 2011-07-02 |  |  |  |  |  |  |
| TVT2414231C0 |  | PT-AF ; Ele(#24)- Build cab & Wiring (Lift) | 15d | 2012-02-05 | 2012-02-22 | TVT2414223C0 |  |  |  |  | 19.24d | 0d |  | SERVICE LIFTS [419 h]; Cost | TVT2414231C0 | 123044096 | 117440512 |  | PT | C | VT | 24 | EL | 142 | 31 | BILL 11 | B11 | S2 | 19 | R00 | ACF11 | LE | 142 | 2011-07-12 | 2011-07-18 |  |  |  |  |  |
| TVT2414227C0 |  | PT-AF ; Ele(#24)- Loading counterweights (Lift) | 3d | 2012-02-13 | 2012-02-16 | TVT2414225C0 |  |  |  |  | 21.24d | 0d |  | SERVICE LIFTS [52 h]; Cost | TVT2414227C0 | 123044096 | 117440512 |  | PT | C | VT | 24 | EL | 142 | 27 | BILL 11 | B11 | S2 | 19 | R00 | ACF11 | LE | 142 | 2011-07-02 | 2011-07-04 | 100 |  |  |  |  |
| TVT2414229C0 |  | PT-AF ; Ele(#24)- Dismantling false car (Lift) | 3d | 2012-02-16 | 2012-02-20 | TVT2414227C0 |  |  |  |  | 21.24d | 2d |  | SERVICE LIFTS [22 h]; Cost | TVT2414229C0 | 125059072 | 117440512 |  | PT | C | VT | 24 | EL | 142 | 29 | BILL 11 | B11 | S2 | 19 | R00 | ACF11 | LE | 142 | 2011-07-05 | 2011-07-11 | 50 |  |  |  |  |
| TVT2414247C0 |  | PT-AF ; Ele(#24)- Inspection, Testing & Commis (Lift) | 6d | 2012-02-22 | 2012-02-29 | TVT2414229C0, TVT2414231C0 |  |  |  |  | 19.24d | 0d |  | SERVICE LIFTS [307 h]; Cost | CVT3914247C0 |  |  |  | PT | C | VT | 24 | EL | 142 | 47 | BILL 11 | B11 | S2 | 19 | R00 | ACF11 | LE | 142 |  |  |  | 1531 |  |  |  |
| TVT2414248C0 |  | PT-AF ; Ele(#24)- Refurbishment | 35d | 2013-01-10 | 2013-02-20 | TVT2414247C0, TVTLT09611C0 FF, TVTLT09612C0 FF |  |  |  |  | 9d | 0d | as late as possible | Labor General [1 h]; Cost | CVT3914247C0 |  |  |  | PT | C | VT | 24 | EL | 142 | 47 | BILL 11 | B11 | S2 | 19 | R00 | ACF11 | LE | 142 |  |  |  | 1531 |  |  |  |
|  | EL25 | **Lift (#25)** |  | 2011-06-12 | 2013-02-20 |  |  |  |  |  |  |  |  |  |  |  |  |  |  |  |  |  |  |  |  |  |  |  |  |  |  |  |  |  |  |  |  |  |  |  |
| TVT2514233C0 |  | PT-AF ; Ele(#25)- Install temp. deck (Lift) | 3d | 2011-06-12 A | 2011-06-30 A | T21CO03399C0 | 100% |  | 2011-09-01 | 2011-09-05 |  |  |  | SERVICE LIFTS [7 h]; Cost | SVT2514233C0 | 125059072 | 117440512 |  | PT | C | VT | 25 | EL | 142 | 33 | BILL 11 | B11 | S2 | 18 | R00 | ACF11 | LE | 142 | 2011-07-22 | 2011-07-31 |  |  | 9147.52 |  |  |
| TVT2514213C0 |  | PT-AF ; Ele(#25)- Install Machine & Controller (Lift) | 7d | 2011-07-05 A | 2011-11-30 | TVT2514211C0 | 80% | 1.4d | 2011-10-05 | 2011-10-13 | 162.6d | 0d |  | SERVICE LIFTS [815 h]; Cost | SVT2514213C0 | 123044096 | 117440512 | 80 | PT | C | VT | 25 | EL | 142 | 13 | BILL 11 | B11 | S2 | 18 | R00 | ACF11 | LE | 142 |  |  |  |  |  | 80 | 50 |
| TVT2514203C0 |  | PT-AF ; Ele(#25)- Fixing template, Plumbing & Install first rail (Lift) | 10d | 2011-10-12 | 2011-10-23 | TVT2514233C0, GNHE08101C10 FS+41d |  |  |  |  | 162.6d | 0d |  | SERVICE LIFTS [22 h]; Cost | SVT2514203C0 | 123044096 | 117440512 |  | PT | C | VT | 25 | EL | 142 | 03 | BILL 11 | B11 | S2 | 18 | R00 | ACF11 | LE | 142 |  |  |  |  |  |  |  |
| TVT2514207C0 |  | PT-AF ; Ele(#25)- Build false car (Lift) | 7d | 2011-10-24 | 2011-10-31 | TVT2514203C0 |  |  |  |  | 162.6d | 0d |  | SERVICE LIFTS [22 h]; Cost | SVT2514207C0 | 125059072 | 117440512 |  | PT | C | VT | 25 | EL | 142 | 07 | BILL 11 | B11 | S2 | 18 | R00 | ACF11 | LE | 142 |  |  |  |  |  |  |  |
| TVT2514209C0 |  | PT-AF ; Ele(#25)- Install brackets, rails & alignment (Lift) | 10d | 2011-11-01 | 2011-11-15 | TVT2514207C0 |  |  |  |  | 162.6d | 0d |  | SERVICE LIFTS [711 h]; Cost | SVT2514209C0 | 123044096 | 117440512 |  | PT | C | VT | 25 | EL | 142 | 09 | BILL 11 | B11 | S2 | 18 | R00 | ACF11 | LE | 142 |  |  |  |  |  |  |  |
| TVT2514211C0 |  | PT-AF ; Ele(#25)- Install Entrance frames & doors (Lift) | 10d | 2011-11-16 | 2011-11-28 | TVT2514209C0 |  |  |  |  | 162.6d | 0d |  | SERVICE LIFTS [531 h]; Cost | SVT2514211C0 | 125059072 | 117440512 |  | PT | C | VT | 25 | EL | 142 | 11 | BILL 11 | B11 | S2 | 18 | R00 | ACF11 | LE | 142 |  |  |  |  |  |  |  |
| TVT2514215C0 |  | PT-AF ; Ele(#25)- Install Governor & rope (Lift) | 3.12d | 2011-11-30 | 2011-12-05 | TVT2514213C0 |  |  |  |  | 162.6d | 0d |  | SERVICE LIFTS [142 h]; Cost | SVT2514215C0 | 125059072 | 117440512 |  | PT | C | VT | 25 | EL | 142 | 15 | BILL 11 | B11 | S2 | 18 | R00 | ACF11 | LE | 142 |  |  |  |  |  |  |  |
| TVT2514217C0 |  | PT-AF ; Ele(#25)- Install counterweight frame (Lift) | 2.88d | 2011-12-05 | 2011-12-08 | TVT2514215C0 |  |  |  |  | 162.6d | 0d |  | SERVICE LIFTS [142 h]; Cost | SVT2514217C0 | 123044096 | 117440512 |  | PT | C | VT | 25 | EL | 142 | 17 | BILL 11 | B11 | S2 | 18 | R00 | ACF11 | LE | 142 |  |  |  |  |  |  |  |
| TVT2514219C0 |  | PT-AF ; Ele(#25)- Hoistway truncking & Wiring (Lift) | 10.12d | 2011-12-08 | 2011-12-20 | TVT2514217C0 |  |  |  |  | 162.6d | 0d |  | SERVICE LIFTS [180 h]; Cost | SVT2514219C0 | 125059072 | 117440512 |  | PT | C | VT | 25 | EL | 142 | 19 | BILL 11 | B11 | S2 | 18 | R00 | ACF11 | LE | 142 |  |  |  |  |  |  |  |
| TVT2514221C0 |  | PT-AF ; Ele(#25)- Machine room wiring (Lift) | 5d | 2011-12-20 | 2011-12-26 | TVT2514219C0 |  |  |  |  | 162.6d | 0d |  | SERVICE LIFTS [37 h]; Cost | SVT2514221C0 | 123044096 | 117440512 |  | PT | C | VT | 25 | EL | 142 | 21 | BILL 11 | B11 | S2 | 18 | R00 | ACF11 | LE | 142 |  |  |  |  |  |  |  |
| TVT2514223C0 |  | PT-AF ; Ele(#25)- Build car frame (Lift) | 6d | 2011-12-26 | 2012-01-03 | TVT2514221C0 |  |  |  |  | 162.6d | 0d |  | SERVICE LIFTS [284 h]; Cost | SVT2514223C0 | 125059072 | 117440512 |  | PT | C | VT | 25 | EL | 142 | 23 | BILL 11 | B11 | S2 | 18 | R00 | ACF11 | LE | 142 |  |  |  |  |  |  |  |
| TVT2514225C0 |  | PT-AF ; Ele(#25)- Main roping (Lift) | 5d | 2012-01-03 | 2012-01-09 | TVT2514223C0 |  |  |  |  | 182.47d | 0d |  | SERVICE LIFTS [142 h]; Cost | SVT2514225C0 | 123044096 | 117440512 |  | PT | C | VT | 25 | EL | 142 | 25 | BILL 11 | B11 | S2 | 18 | R00 | ACF11 | LE | 142 | 2011-07-02 |  |  |  |  |  |  |
| TVT2514231C0 |  | PT-AF ; Ele(#25)- Build cab & Wiring (Lift) | 29.88d | 2012-01-03 | 2012-02-08 | TVT2514223C0 |  |  |  |  | 162.6d | 0d |  | SERVICE LIFTS [269 h]; Cost | SVT2514231C0 | 125059072 | 117440512 |  | PT | C | VT | 25 | EL | 142 | 31 | BILL 11 | B11 | S2 | 18 | R00 | ACF11 | LE | 142 | 2011-07-15 | 2011-07-21 |  |  |  |  |  |
| TVT2514227C0 |  | PT-AF ; Ele(#25)- Loading counterweights (Lift) | 3d | 2012-01-09 | 2012-01-12 | TVT2514225C0 |  |  |  |  | 182.47d | 0d |  | SERVICE LIFTS [37 h]; Cost | SVT2514227C0 | 125059072 | 117440512 |  | PT | C | VT | 25 | EL | 142 | 27 | BILL 11 | B11 | S2 | 18 | R00 | ACF11 | LE | 142 | 2011-07-02 | 2011-07-04 | 100 |  |  |  |  |
| TVT2514229C0 |  | PT-AF ; Ele(#25)- Dismantling false car (Lift) | 2d | 2012-01-12 | 2012-01-15 | TVT2514227C0 |  |  |  |  | 182.47d | 19.88d |  | SERVICE LIFTS [15 h]; Cost | SVT2514229C0 | 123044096 | 117440512 |  | PT | C | VT | 25 | EL | 142 | 29 | BILL 11 | B11 | S2 | 18 | R00 | ACF11 | LE | 142 | 2011-07-05 | 2011-07-14 | 50 |  |  |  |  |
| TVT2514247C0 |  | PT-AF ; Ele(#25)- Inspection, Testing & Commis (Lift) | 6d | 2012-02-08 | 2012-02-15 | TVT2514229C0, TVT2514231C0 |  |  |  |  | 162.6d | 51.35d |  | SERVICE LIFTS [194 h]; Cost | CVT3914247C0 |  |  |  | PT | C | VT | 25 | EL | 142 | 47 | BILL 11 | B11 | S2 | 18 | R00 | ACF11 | LE | 142 |  |  |  | 1531 |  |  |  |
| TVT2514248C0 |  | PT-AF ; Ele(#25)- Refurbishment | 35d | 2013-01-10 | 2013-02-20 | TVT2514247C0 |  |  |  |  | 9d | 0d | as late as possible | Labor General; Cost | CVT3914247C0 |  |  |  | PT | C | VT | 25 | EL | 142 | 47 | BILL 11 | B11 | S1 | 18 | R00 | ACF11 |  | 142 |  |  |  | 1531 |  |  |  |

| ID | WBS | Activity | Duration | Start | Finish | Predecessors | Total float | Free float | Constraint | Resources | change id | No.of Wor Days | Duration/Differe | CCAD BUILDING(SET) | CCAD PHASE(SET) | CCAD FLOOR(SET) | CCAD ZONE(SET) | CCAD WORK(SET) | CCAD SECTION(SET) | CCAD SERIAL No.(SET) | CCAD CBS(SET) | CCAD BILL(SET) | CCAD HANDOVER(SET) | CCAD TAG(SET) | CCAD REV(SET) | CCADACF (SET) | CCAD CSA | CCAD SSCF | user_end_date3 | user_end_date4 | user_text4 | NEW ACTIVITY ID |
| --- | --- | --- | --- | --- | --- | --- | --- | --- | --- | --- | --- | --- | --- | --- | --- | --- | --- | --- | --- | --- | --- | --- | --- | --- | --- | --- | --- | --- | --- | --- | --- | --- |
|  | EL26 | **Lift (#26~27)** |  | 2011-11-01 | 2012-09-01 |  |  |  |  |  |  |  |  |  |  |  |  |  |  |  |  |  |  |  |  |  |  |  |  |  |  |  |
| TVT2614203C0 |  | PT-AF ; Ele(#26~27)- Fixing template, Plumbing (Lift) | 8d | 2011-11-01 | 2011-11-13 | BLZHC01590C0, GNHE08101C10 FS+61d | 111.25d | 0d |  | SERVICE LIFTS [7 h]; Cost | TVT2614203C0 | 125059072 | 117440512 | PT | C | VT | 26 | EL | 142 | 03 | BILL 11 | B11 | S2 | 17 | R00 | ACF11 | LE | 142 |  |  |  |  |
| TVT2614205C0 |  | PT-AF ; Ele(#26~27)- Install first rails (Lift) | 8d | 2011-11-14 | 2011-11-22 | TVT2614203C0 | 111.25d | 0d |  | SERVICE LIFTS [22 h]; Cost | TVT2614205C0 | 123044096 | 117440512 | PT | C | VT | 26 | EL | 142 | 05 | BILL 11 | B11 | S2 | 17 | R00 | ACF11 | LE | 142 |  |  |  |  |
| TVT2614207C0 |  | PT-AF ; Ele(#26~27)- Build false car (Lift) | 8d | 2011-11-23 | 2011-12-04 | TVT2614205C0 | 111.25d | 0d |  | SERVICE LIFTS [22 h]; Cost | TVT2614207C0 | 125059072 | 117440512 | PT | C | VT | 26 | EL | 142 | 07 | BILL 11 | B11 | S2 | 17 | R00 | ACF11 | LE | 142 |  |  |  |  |
| TVT2614209C0 |  | PT-AF ; Ele(#26~27)- Install brackets, rails & alignment (Lift) | 14.88d | 2011-12-05 | 2011-12-21 | TVT2614207C0 | 111.25d | 0d |  | SERVICE LIFTS [696 h]; Cost | TVT2614209C0 | 123044096 | 117440512 | PT | C | VT | 26 | EL | 142 | 09 | BILL 11 | B11 | S2 | 17 | R00 | ACF11 | LE | 142 |  |  |  |  |
| TVT2614211C0 |  | PT-AF ; Ele(#26~27)- Install Entrance frames & doors (Lift) | 15d | 2011-12-21 | 2012-01-09 | TVT2614209C0 | 111.25d | 0d |  | SERVICE LIFTS [516 h]; Cost | TVT2614211C0 | 125059072 | 117440512 | PT | C | VT | 26 | EL | 142 | 11 | BILL 11 | B11 | S2 | 17 | R00 | ACF11 | LE | 142 |  |  |  |  |
| TVT2614213C0 |  | PT-AF ; Ele(#26~27)- Install Machine & Controller (Lift) | 7d | 2012-01-09 | 2012-01-17 | TVT2614211C0 | 111.25d | 0d |  | SERVICE LIFTS [793 h]; Cost | TVT2614213C0 | 123044096 | 117440512 | PT | C | VT | 26 | EL | 142 | 13 | BILL 11 | B11 | S2 | 17 | R00 | ACF11 | LE | 142 |  |  |  |  |
| TVT2614215C0 |  | PT-AF ; Ele(#26~27)- Install Governor & rope (Lift) | 3d | 2012-01-17 | 2012-01-21 | TVT2614213C0 | 111.25d | 0d |  | SERVICE LIFTS [142 h]; Cost | TVT2614215C0 | 125059072 | 117440512 | PT | C | VT | 26 | EL | 142 | 15 | BILL 11 | B11 | S2 | 17 | R00 | ACF11 | LE | 142 |  |  |  |  |
| TVT2614217C0 |  | PT-AF ; Ele(#26~27)- Install counterweight frame (Lift) | 4d | 2012-01-21 | 2012-01-25 | TVT2614215C0 | 111.25d | 0d |  | SERVICE LIFTS [142 h]; Cost | TVT2614217C0 | 123044096 | 117440512 | PT | C | VT | 26 | EL | 142 | 17 | BILL 11 | B11 | S2 | 17 | R00 | ACF11 | LE | 142 | 2011-07-02 |  |  |  |
| TVT2614219C0 |  | PT-AF ; Ele(#26~27)- Hoistway truncking & Wiring (Lift) | 15d | 2012-01-25 | 2012-02-13 | TVT2614217C0 | 111.25d | 0d |  | SERVICE LIFTS [172 h]; Cost | TVT2614219C0 | 125059072 | 117440512 | PT | C | VT | 26 | EL | 142 | 19 | BILL 11 | B11 | S2 | 17 | R00 | ACF11 | LE | 142 | 2011-07-02 | 2011-07-10 | 100 |  |
| TVT2614221C0 |  | PT-AF ; Ele(#26~27)- Machine room wiring (Lift) | 7d | 2012-02-13 | 2012-02-21 | TVT2614219C0 | 111.25d | 0d |  | SERVICE LIFTS [37 h]; Cost | TVT2614221C0 | 123044096 | 117440512 | PT | C | VT | 26 | EL | 142 | 21 | BILL 11 | B11 | S2 | 17 | R00 | ACF11 | LE | 142 | 2011-07-10 | 2011-07-18 | 50 |  |
| TVT2614223C0 |  | PT-AF ; Ele(#26~27)- Build car frame (Lift) | 9.88d | 2012-02-21 | 2012-03-04 | TVT2614221C0 | 111.25d | 0d |  | SERVICE LIFTS [277 h]; Cost | TVT2614223C0 | 125059072 | 117440512 | PT | C | VT | 26 | EL | 142 | 23 | BILL 11 | B11 | S2 | 17 | R00 | ACF11 | LE | 142 | 2011-07-18 | 2011-07-26 |  |  |
| TVT2614225C0 |  | PT-AF ; Ele(#26~27)- Main roping (Lift) | 7d | 2012-03-04 | 2012-03-12 | TVT2614223C0 | 125.25d | 0d |  | SERVICE LIFTS [142 h]; Cost | TVT2614225C0 | 123044096 | 117440512 | PT | C | VT | 26 | EL | 142 | 25 | BILL 11 | B11 | S2 | 17 | R00 | ACF11 | LE | 142 | 2011-07-26 | 2011-08-10 |  |  |
| TVT2614231C0 |  | PT-AF ; Ele(#26~27)- Build cab & Wiring (Lift) | 30d | 2012-03-04 | 2012-04-08 | TVT2614223C0 | 111.25d | 0d |  | SERVICE LIFTS [262 h]; Cost | TVT2614231C0 | 125059072 | 117440512 | PT | C | VT | 26 | EL | 142 | 31 | BILL 11 | B11 | S2 | 17 | R00 | ACF11 | LE | 142 |  |  |  |  |
| TVT2614227C0 |  | PT-AF ; Ele(#26~27)- Loading counterweights (Lift) | 6d | 2012-03-12 | 2012-03-19 | TVT2614225C0 | 125.25d | 0d |  | SERVICE LIFTS [37 h]; Cost | TVT2614227C0 | 125059072 | 117440512 | PT | C | VT | 26 | EL | 142 | 27 | BILL 11 | B11 | S2 | 17 | R00 | ACF11 | LE | 142 |  |  |  |  |
| TVT2614229C0 |  | PT-AF ; Ele(#26~27)- Dismantling false car (Lift) | 3d | 2012-03-19 | 2012-03-22 | TVT2614227C0 | 125.25d | 14d |  | SERVICE LIFTS [15 h]; Cost | TVT2614229C0 | 123044096 | 117440512 | PT | C | VT | 26 | EL | 142 | 29 | BILL 11 | B11 | S2 | 17 | R00 | ACF11 | LE | 142 |  |  |  |  |
| TVT2614247C0 |  | PT-AF ; Ele(#26~27)- Inspection, Testing & Commis (Lift) | 6d | 2012-04-08 | 2012-04-15 | TVT2614229C0, TVT2614231C0 | 111.25d | 0d |  | SERVICE LIFTS [187 h]; Cost | CVT3914247C0 |  |  | PT | C | VT | 26 | EL | 142 | 47 | BILL 11 | B11 | S2 | 17 | R00 | ACF11 | LE | 142 |  |  |  | 1531 |
| TVT2614248C0 |  | PT-AF ; Ele(#26~27)- Refurbishment | 39d | 2012-07-16 | 2012-09-01 | TVT2614247C0 | 179.5d | 0d | as late as possible | Labor General; Cost | CVT3914247C0 |  |  | PT | C | VT | 26 | EL | 142 | 47 | BILL 11 | B11 | S1 | 17 | R00 | ACF11 |  | 142 |  |  |  | 1531 |
|  | EL28 | **Lift (#28~29)** |  | 2011-11-01 | 2013-02-20 |  |  |  |  |  |  |  |  |  |  |  |  |  |  |  |  |  |  |  |  |  |  |  |  |  |  |  |
| TVT2814233C0 |  | PT-AF ; Ele(#28~29)- Install temp. deck (Lift) | 3d | 2011-11-01 | 2011-11-03 | T21CO03399C0, GNHE08101C10 FS+61d | 130d | 0d |  | SERVICE LIFTS [7 h]; Cost | TVT2814233C0 | 123044096 | 117440512 | PT | C | VT | 28 | EL | 142 | 33 | BILL 11 | B11 | S2 | 16 | R00 | ACF11 | LE | 142 | 2011-08-03 | 2011-08-05 |  |  |
| TVT2814239C0 |  | PT-AF ; Ele(#28~29)- Fixing template, plumbing (Lift) | 3d | 2011-11-05 | 2011-11-10 | TVT2814233C0 | 130d | 0d |  | SERVICE LIFTS [22 h]; Cost | TVT2814239C0 | 125059072 | 117440512 | PT | C | VT | 28 | EL | 142 | 39 | BILL 11 | B11 | S2 | 16 | R00 | ACF11 | LE | 142 |  |  |  |  |
| TVT2814241C0 |  | PT-AF ; Ele(#28~29)- Build false car (Lift) | 7d | 2011-11-12 | 2011-11-19 | TVT2814239C0 | 130d | 0d |  | SERVICE LIFTS [22 h]; Cost | TVT2814241C0 | 123044096 | 117440512 | PT | C | VT | 28 | EL | 142 | 41 | BILL 11 | B11 | S2 | 16 | R00 | ACF11 | LE | 142 |  |  |  |  |
| TVT2814243C0 |  | PT-AF ; Ele(#28~29)- Install brackets, rails & alignment (Lift) | 20d | 2011-11-20 | 2011-12-14 | TVT2814241C0 | 130d | 0d |  | SERVICE LIFTS [726 h]; Cost | TVT2814243C0 | 125059072 | 117440512 | PT | C | VT | 28 | EL | 142 | 43 | BILL 11 | B11 | S2 | 16 | R00 | ACF11 | LE | 142 |  |  |  |  |
| TVT2814245C0 |  | PT-AF ; Ele(#28~29)- Install Entrance frames & doors (Lift) | 20d | 2011-12-15 | 2012-01-08 | TVT2814243C0 | 130d | 0d |  | SERVICE LIFTS [546 h]; Cost | TVT2814245C0 | 123044096 | 117440512 | PT | C | VT | 28 | EL | 142 | 45 | BILL 11 | B11 | S2 | 16 | R00 | ACF11 | LE | 142 |  |  |  |  |
| TVT2814213C0 |  | PT-AF ; Ele(#28~29)- Install Machine & Controller (Lift) | 7d | 2012-01-09 | 2012-01-16 | BLZHC01590C0, TVT2814245C0 | 130d | 0d |  | SERVICE LIFTS [838 h]; Cost | TVT2814213C0 | 125059072 | 117440512 | PT | C | VT | 28 | EL | 142 | 13 | BILL 11 | B11 | S2 | 16 | R00 | ACF11 | LE | 142 |  |  |  |  |
| TVT2814215C0 |  | PT-AF ; Ele(#28~29)- Install Governor & rope (Lift) | 3d | 2012-01-17 | 2012-01-19 | TVT2814213C0 | 130d | 0d |  | SERVICE LIFTS [142 h]; Cost | TVT2814215C0 | 123044096 | 117440512 | PT | C | VT | 28 | EL | 142 | 15 | BILL 11 | B11 | S2 | 16 | R00 | ACF11 | LE | 142 |  |  |  |  |
| TVT2814217C0 |  | PT-AF ; Ele(#28~29)- Install counterweight frame (Lift) | 4d | 2012-01-21 | 2012-01-24 | TVT2814215C0 | 130d | 0d |  | SERVICE LIFTS [142 h]; Cost | TVT2814217C0 | 125059072 | 117440512 | PT | C | VT | 28 | EL | 142 | 17 | BILL 11 | B11 | S2 | 16 | R00 | ACF11 | LE | 142 | 2011-07-02 |  |  |  |
| TVT2814219C0 |  | PT-AF ; Ele(#28~29)- Hoistway truncking & Wiring (Lift) | 15d | 2012-01-25 | 2012-02-12 | TVT2814217C0 | 130d | 0d |  | SERVICE LIFTS [180 h]; Cost | TVT2814219C0 | 123044096 | 117440512 | PT | C | VT | 28 | EL | 142 | 19 | BILL 11 | B11 | S2 | 16 | R00 | ACF11 | LE | 142 | 2011-07-02 | 2011-07-04 | 100 |  |
| TVT2814221C0 |  | PT-AF ; Ele(#28~29)- Machine room wiring (Lift) | 7d | 2012-02-13 | 2012-02-20 | TVT2814219C0 | 130d | 0d |  | SERVICE LIFTS [37 h]; Cost | TVT2814221C0 | 125059072 | 117440512 | PT | C | VT | 28 | EL | 142 | 21 | BILL 11 | B11 | S2 | 16 | R00 | ACF11 | LE | 142 | 2011-07-05 | 2011-07-11 | 50 |  |
| TVT2814223C0 |  | PT-AF ; Ele(#28~29)- Build car frame (Lift) | 7d | 2012-02-21 | 2012-02-28 | TVT2814221C0 | 130d | 0d |  | SERVICE LIFTS [292 h]; Cost | TVT2814223C0 | 123044096 | 117440512 | PT | C | VT | 28 | EL | 142 | 23 | BILL 11 | B11 | S2 | 16 | R00 | ACF11 | LE | 142 | 2011-07-12 | 2011-07-18 |  |  |
| TVT2814225C0 |  | PT-AF ; Ele(#28~29)- Main roping (Lift) | 7d | 2012-02-29 | 2012-03-07 | TVT2814223C0 | 130d | 0d |  | SERVICE LIFTS [142 h]; Cost | TVT2814225C0 | 125059072 | 117440512 | PT | C | VT | 28 | EL | 142 | 25 | BILL 11 | B11 | S2 | 16 | R00 | ACF11 | LE | 142 | 2011-07-19 | 2011-08-02 |  |  |
| TVT2814231C0 |  | PT-AF ; Ele(#28~29)- Build cab & Wiring (Lift) | 15d | 2012-02-29 | 2012-03-17 | TVT2814223C0 | 130d | 0d |  | SERVICE LIFTS [269 h]; Cost | TVT2814231C0 | 123044096 | 117440512 | PT | C | VT | 28 | EL | 142 | 31 | BILL 11 | B11 | S2 | 16 | R00 | ACF11 | LE | 142 | 2011-07-02 |  |  |  |
| TVT2814227C0 |  | PT-AF ; Ele(#28~29)- Loading counterweights (Lift) | 5d | 2012-03-08 | 2012-03-13 | TVT2814225C0 | 130d | 0d |  | SERVICE LIFTS [37 h]; Cost | TVT2814227C0 | 123044096 | 117440512 | PT | C | VT | 28 | EL | 142 | 27 | BILL 11 | B11 | S2 | 16 | R00 | ACF11 | LE | 142 | 2011-09-02 | 2011-09-16 |  |  |
| TVT2814229C0 |  | PT-AF ; Ele(#28~29)- Dismantling false car (Lift) | 3d | 2012-03-14 | 2012-03-17 | TVT2814227C0 | 130d | 0d |  | SERVICE LIFTS [15 h]; Cost | TVT2814229C0 | 125059072 | 117440512 | PT | C | VT | 28 | EL | 142 | 29 | BILL 11 | B11 | S2 | 16 | R00 | ACF11 | LE | 142 | 2011-07-02 |  |  |  |
| TVT2814247C0 |  | PT-AF ; Ele(#28~29)- Inspection, Testing & Commis (Lift) | 6d | 2012-03-18 | 2012-03-24 | TVT2814229C0, TVT2814231C0 | 130d | 18.75d |  | SERVICE LIFTS [202 h]; Cost | CVT3914247C0 |  |  | PT | C | VT | 28 | EL | 142 | 47 | BILL 11 | B11 | S2 | 16 | R00 | ACF11 | LE | 142 |  |  |  | 1531 |
| TVT2814248C0 |  | PT-AF ; Ele(#28~29)- Refurbishment | 35d | 2013-01-10 | 2013-02-20 | TVT2814247C0 | 9d | 0d | as late as possible | Labor General [1 h]; Cost | CVT3914247C0 |  |  | PT | C | VT | 28 | EL | 142 | 47 | BILL 11 | B11 | S2 | 16 | R00 | ACF11 | LE | 142 |  |  |  | 1531 |

| ID | WBS | Activity | Duration | Start | Finish | Predecessors | Total float | Free float | Resources | change id | No.of Wor Days | Duration/Differe | CCAD BUILDING(SET) | CCAD PHASE(SET) | CCAD FLOOR(SET) | CCAD ZONE(SET) | CCAD WORK(SET) | CCAD SECTION(SET) | CCAD SERIAL No.(SET) | CCAD CBS(SET) | CCAD BILL(SET) | CCAD HANDOVER(SET) | CCAD TAG(SET) | CCAD REV(SET) | CCADACF (SET) | CCAD CSA | CCAD SSCF | NEW ACTIVITY ID |
| --- | --- | --- | --- | --- | --- | --- | --- | --- | --- | --- | --- | --- | --- | --- | --- | --- | --- | --- | --- | --- | --- | --- | --- | --- | --- | --- | --- | --- |
|  | EL30 | **Lift (#30)** |  | 2012-02-01 | 2012-07-25 |  |  |  |  |  |  |  |  |  |  |  |  |  |  |  |  |  |  |  |  |  |  |  |
| TVT3014203C0 |  | PT-AF ; Ele(#30)- Fixing template, Plumbing (Lift) | 8d | 2012-02-01 | 2012-02-11 | T21CO03399C0, GNHE08101C10 FS+153d | 233.62d | 0d | SERVICE LIFTS [7 h]; Cost | TVT3014203C0 | 125059072 | 117440512 | PT | C | VT | 30 | EL | 142 | 03 | BILL 11 | B11 | S2 | 15 | R00 | ACF11 | LE | 142 |  |
| TVT3014205C0 |  | PT-AF ; Ele(#30)- Install first rails (Lift) | 7.88d | 2012-02-12 | 2012-02-20 | TVT3014203C0 | 233.62d | 0d | SERVICE LIFTS [15 h]; Cost | TVT3014205C0 | 123044096 | 117440512 | PT | C | VT | 30 | EL | 142 | 05 | BILL 11 | B11 | S2 | 15 | R00 | ACF11 | LE | 142 |  |
| TVT3014207C0 |  | PT-AF ; Ele(#30)- Build false car (Lift) | 8d | 2012-02-20 | 2012-02-29 | TVT3014205C0 | 233.62d | 0d | SERVICE LIFTS [15 h]; Cost | TVT3014207C0 | 125059072 | 117440512 | PT | C | VT | 30 | EL | 142 | 07 | BILL 11 | B11 | S2 | 15 | R00 | ACF11 | LE | 142 |  |
| TVT3014209C0 |  | PT-AF ; Ele(#30)- Install brackets, rails & alignment (Lift) | 14.88d | 2012-02-29 | 2012-03-18 | TVT3014207C0 | 233.62d | 0d | SERVICE LIFTS [224 h]; Cost | TVT3014209C0 | 123044096 | 117440512 | PT | C | VT | 30 | EL | 142 | 09 | BILL 11 | B11 | S2 | 15 | R00 | ACF11 | LE | 142 |  |
| TVT3014211C0 |  | PT-AF ; Ele(#30)- Install Entrance frames & doors (Lift) | 16d | 2012-03-18 | 2012-04-05 | TVT3014209C0 | 233.62d | 0d | SERVICE LIFTS [172 h]; Cost | TVT3014211C0 | 125059072 | 117440512 | PT | C | VT | 30 | EL | 142 | 11 | BILL 11 | B11 | S2 | 15 | R00 | ACF11 | LE | 142 |  |
| TVT3014213C0 |  | PT-AF ; Ele(#30)- Install Machine & Controller (Lift) | 7d | 2012-04-05 | 2012-04-14 | TVT3014211C0 | 233.62d | 0d | SERVICE LIFTS [239 h]; Cost | TVT3014213C0 | 123044096 | 117440512 | PT | C | VT | 30 | EL | 142 | 13 | BILL 11 | B11 | S2 | 15 | R00 | ACF11 | LE | 142 |  |
| TVT3014215C0 |  | PT-AF ; Ele(#30)- Install Governor & rope (Lift) | 3d | 2012-04-14 | 2012-04-17 | TVT3014213C0 | 233.62d | 0d | SERVICE LIFTS [45 h]; Cost | TVT3014215C0 | 125059072 | 117440512 | PT | C | VT | 30 | EL | 142 | 15 | BILL 11 | B11 | S2 | 15 | R00 | ACF11 | LE | 142 |  |
| TVT3014217C0 |  | PT-AF ; Ele(#30)- Install counterweight frame (Lift) | 3.88d | 2012-04-17 | 2012-04-22 | TVT3014215C0 | 233.62d | 0d | SERVICE LIFTS [45 h]; Cost | TVT3014217C0 | 123044096 | 117440512 | PT | C | VT | 30 | EL | 142 | 17 | BILL 11 | B11 | S2 | 15 | R00 | ACF11 | LE | 142 |  |
| TVT3014219C0 |  | PT-AF ; Ele(#30)- Hoistway truncking & Wiring (Lift) | 15d | 2012-04-22 | 2012-05-09 | TVT3014217C0 | 233.62d | 0d | SERVICE LIFTS [60 h]; Cost | TVT3014219C0 | 125059072 | 117440512 | PT | C | VT | 30 | EL | 142 | 19 | BILL 11 | B11 | S2 | 15 | R00 | ACF11 | LE | 142 |  |
| TVT3014221C0 |  | PT-AF ; Ele(#30)- Machine room wiring (Lift) | 10d | 2012-05-09 | 2012-05-21 | TVT3014219C0 | 233.62d | 0d | SERVICE LIFTS [15 h]; Cost | TVT3014221C0 | 123044096 | 117440512 | PT | C | VT | 30 | EL | 142 | 21 | BILL 11 | B11 | S2 | 15 | R00 | ACF11 | LE | 142 |  |
| TVT3014223C0 |  | PT-AF ; Ele(#30)- Build car frame (Lift) | 4.88d | 2012-05-21 | 2012-05-27 | TVT3014221C0 | 233.62d | 0d | SERVICE LIFTS [90 h]; Cost | TVT3014223C0 | 125059072 | 117440512 | PT | C | VT | 30 | EL | 142 | 23 | BILL 11 | B11 | S2 | 15 | R00 | ACF11 | LE | 142 |  |
| TVT3014225C0 |  | PT-AF ; Ele(#30)- Main roping (Lift) | 7d | 2012-05-27 | 2012-06-04 | TVT3014223C0 | 261.5d | 0d | SERVICE LIFTS [45 h]; Cost | TVT3014225C0 | 123044096 | 117440512 | PT | C | VT | 30 | EL | 142 | 25 | BILL 11 | B11 | S2 | 15 | R00 | ACF11 | LE | 142 |  |
| TVT3014231C0 |  | PT-AF ; Ele(#30)- Build cab & Wiring (Lift) | 29.88d | 2012-05-27 | 2012-07-02 | TVT3014223C0 | 233.62d | 0d | SERVICE LIFTS [82 h]; Cost | TVT3014231C0 | 125059072 | 117440512 | PT | C | VT | 30 | EL | 142 | 31 | BILL 11 | B11 | S2 | 15 | R00 | ACF11 | LE | 142 |  |
| TVT3014227C0 |  | PT-AF ; Ele(#30)- Loading counterweights (Lift) | 6d | 2012-06-04 | 2012-06-11 | TVT3014225C0 | 261.5d | 0d | SERVICE LIFTS [15 h]; Cost | TVT3014227C0 | 125059072 | 117440512 | PT | C | VT | 30 | EL | 142 | 27 | BILL 11 | B11 | S2 | 15 | R00 | ACF11 | LE | 142 |  |
| TVT3014229C0 |  | PT-AF ; Ele(#30)- Dismantling false car (Lift) | 3d | 2012-06-11 | 2012-06-14 | TVT3014227C0 | 261.5d | 27.88d | SERVICE LIFTS [7 h]; Cost | TVT3014229C0 | 123044096 | 117440512 | PT | C | VT | 30 | EL | 142 | 29 | BILL 11 | B11 | S2 | 15 | R00 | ACF11 | LE | 142 |  |
| TVT3014239C0 |  | PT-AF ; Ele(#30)- Cab Interior finishes (Lift) | 14d | 2012-07-02 | 2012-07-18 | TVT3014231C0 | 233.62d | 0d | SERVICE LIFTS [1 h]; Cost | TVT3014239C0 | 123044096 | 117440512 | PT | C | VT | 30 | EL | 142 | 39 | BILL 11 | B11 | S2 | 15 | R00 | ACF11 | LE | 142 |  |
| TVT3014247C0 |  | PT-AF ; Ele(#30)- Inspection, Testing & Commis (Lift) | 6d | 2012-07-18 | 2012-07-25 | TVT3014227C0, TVT3014229C0, TVT3014239C0 | 233.62d | 217.97d | SERVICE LIFTS [60 h]; Cost | CVT3914247C0 |  |  | PT | C | VT | 30 | EL | 142 | 47 | BILL 11 | B11 | S2 | 15 | R00 | ACF11 | LE | 142 | 1531 |
|  | EL31 | **Lift (#31)** |  | 2012-02-01 | 2012-09-01 |  |  |  |  |  |  |  |  |  |  |  |  |  |  |  |  |  |  |  |  |  |  |  |
| TVT3114203C0 |  | PT-AF ; Ele(#31)- Fixing template, Plumbing (Lift) | 8d | 2012-02-01 | 2012-02-11 | T21CO03399C0, GNHE08101C10 FS+153d | 102.38d | 0d | SERVICE LIFTS [7 h]; Cost | TVT3114203C0 | 123044096 | 117440512 | PT | C | VT | 31 | EL | 142 | 03 | BILL 11 | B11 | S2 | 14 | R00 | ACF11 | LE | 142 |  |
| TVT3114205C0 |  | PT-AF ; Ele(#31)- Install first rails (Lift) | 7.88d | 2012-02-12 | 2012-02-20 | TVT3114203C0 | 102.38d | 0d | SERVICE LIFTS [15 h]; Cost | TVT3114205C0 | 125059072 | 117440512 | PT | C | VT | 31 | EL | 142 | 05 | BILL 11 | B11 | S2 | 14 | R00 | ACF11 | LE | 142 |  |
| TVT3114207C0 |  | PT-AF ; Ele(#31)- Build false car (Lift) | 8d | 2012-02-20 | 2012-02-29 | TVT3114205C0 | 102.38d | 0d | SERVICE LIFTS [15 h]; Cost | TVT3114207C0 | 123044096 | 117440512 | PT | C | VT | 31 | EL | 142 | 07 | BILL 11 | B11 | S2 | 14 | R00 | ACF11 | LE | 142 |  |
| TVT3114209C0 |  | PT-AF ; Ele(#31)- Install brackets, rails & alignment (Lift) | 15d | 2012-02-29 | 2012-03-18 | TVT3114207C0 | 102.38d | 0d | SERVICE LIFTS [224 h]; Cost | TVT3114209C0 | 125059072 | 117440512 | PT | C | VT | 31 | EL | 142 | 09 | BILL 11 | B11 | S2 | 14 | R00 | ACF11 | LE | 142 |  |
| TVT3114211C0 |  | PT-AF ; Ele(#31)- Install Entrance frames & doors (Lift) | 12d | 2012-03-18 | 2012-04-01 | TVT3114209C0 | 102.38d | 0d | SERVICE LIFTS [172 h]; Cost | TVT3114211C0 | 123044096 | 117440512 | PT | C | VT | 31 | EL | 142 | 11 | BILL 11 | B11 | S2 | 14 | R00 | ACF11 | LE | 142 |  |
| TVT3114213C0 |  | PT-AF ; Ele(#31)- Install Machine & Controller (Lift) | 6.88d | 2012-04-01 | 2012-04-09 | TVT3114211C0 | 179.5d | 0d | SERVICE LIFTS [239 h]; Cost | TVT3114213C0 | 125059072 | 117440512 | PT | C | VT | 31 | EL | 142 | 13 | BILL 11 | B11 | S2 | 14 | R00 | ACF11 | LE | 142 |  |
| TVT3114215C0 |  | PT-AF ; Ele(#31)- Install Governor & rope (Lift) | 3d | 2012-04-09 | 2012-04-12 | TVT3114213C0 | 179.5d | 0d | SERVICE LIFTS [45 h]; Cost | TVT3114215C0 | 123044096 | 117440512 | PT | C | VT | 31 | EL | 142 | 15 | BILL 11 | B11 | S2 | 14 | R00 | ACF11 | LE | 142 |  |
| TVT3114217C0 |  | PT-AF ; Ele(#31)- Install counterweight frame (Lift) | 4d | 2012-04-12 | 2012-04-17 | TVT3114215C0 | 179.5d | 0d | SERVICE LIFTS [45 h]; Cost | TVT3114217C0 | 125059072 | 117440512 | PT | C | VT | 31 | EL | 142 | 17 | BILL 11 | B11 | S2 | 14 | R00 | ACF11 | LE | 142 |  |
| TVT3114219C0 |  | PT-AF ; Ele(#31)- Hoistway truncking & Wiring (Lift) | 15d | 2012-04-17 | 2012-05-05 | TVT3114217C0 | 179.5d | 0d | SERVICE LIFTS [60 h]; Cost | TVT3114219C0 | 123044096 | 117440512 | PT | C | VT | 31 | EL | 142 | 19 | BILL 11 | B11 | S2 | 14 | R00 | ACF11 | LE | 142 |  |
| TVT3114221C0 |  | PT-AF ; Ele(#31)- Machine room wiring (Lift) | 10d | 2012-05-05 | 2012-05-16 | TVT3114219C0 | 179.5d | 0d | SERVICE LIFTS [15 h]; Cost | TVT3114221C0 | 125059072 | 117440512 | PT | C | VT | 31 | EL | 142 | 21 | BILL 11 | B11 | S2 | 14 | R00 | ACF11 | LE | 142 |  |
| TVT3114223C0 |  | PT-AF ; Ele(#31)- Build car frame (Lift) | 5d | 2012-05-16 | 2012-05-22 | TVT3114221C0 | 179.5d | 0d | SERVICE LIFTS [90 h]; Cost | TVT3114223C0 | 123044096 | 117440512 | PT | C | VT | 31 | EL | 142 | 23 | BILL 11 | B11 | S2 | 14 | R00 | ACF11 | LE | 142 |  |
| TVT3114225C0 |  | PT-AF ; Ele(#31)- Main roping (Lift) | 7d | 2012-05-22 | 2012-05-30 | TVT3114223C0 | 204.38d | 0d | SERVICE LIFTS [45 h]; Cost | TVT3114225C0 | 125059072 | 117440512 | PT | C | VT | 31 | EL | 142 | 25 | BILL 11 | B11 | S2 | 14 | R00 | ACF11 | LE | 142 |  |
| TVT3114231C0 |  | PT-AF ; Ele(#31)- Build cab & Wiring (Lift) | 29.5d | 2012-05-22 | 2012-06-27 | TVT3114223C0 | 179.5d | 0d | SERVICE LIFTS [82 h]; Cost | TVT3114231C0 | 123044096 | 117440512 | PT | C | VT | 31 | EL | 142 | 31 | BILL 11 | B11 | S2 | 14 | R00 | ACF11 | LE | 142 |  |
| TVT3114227C0 |  | PT-AF ; Ele(#31)- Loading counterweights (Lift) | 6d | 2012-05-30 | 2012-06-06 | TVT3114225C0 | 204.38d | 0d | SERVICE LIFTS [15 h]; Cost | TVT3114227C0 | 123044096 | 117440512 | PT | C | VT | 31 | EL | 142 | 27 | BILL 11 | B11 | S2 | 14 | R00 | ACF11 | LE | 142 |  |
| TVT3114229C0 |  | PT-AF ; Ele(#31)- Dismantling false car (Lift) | 2.88d | 2012-06-06 | 2012-06-10 | TVT3114227C0 | 204.38d | 13.62d | SERVICE LIFTS [7 h]; Cost | TVT3114229C0 | 125059072 | 117440512 | PT | C | VT | 31 | EL | 142 | 29 | BILL 11 | B11 | S2 | 14 | R00 | ACF11 | LE | 142 |  |
| TVT3114249C0 |  | PT-AF ; Ele(#31)- Permanent power supply required (Lift) | 0.75d | 2012-06-26 | 2012-06-27 | TVT3114229C0 FF, TVT3114231C0 FF | 190.75d | 11.25d | SERVICE LIFTS [1 h]; Cost | TVT3114249C0 | 123044096 | 117440512 | PT | C | VT | 31 | EL | 142 | 49 | BILL 11 | B11 | S2 | 14 | R00 | ACF11 | LE | 142 |  |
| TVT3114239C0 |  | PT-AF ; Ele(#31)- Cab Interior finishes (Lift) | 11.25d | 2012-06-27 | 2012-07-10 | TVT3114231C0 | 179.5d | 0d | SERVICE LIFTS [1 h]; Cost | TVT3114239C0 | 125059072 | 117440512 | PT | C | VT | 31 | EL | 142 | 39 | BILL 11 | B11 | S2 | 14 | R00 | ACF11 | LE | 142 |  |
| TVT3114241C0 |  | PT-AF ; Ele(#31)- Adjusting (Lift) | 27.62d | 2012-07-10 | 2012-08-12 | TVT3114229C0, TVT3114231C0, TVT3114239C0, TVT3114249C0 | 179.5d | 0d | SERVICE LIFTS [30 h]; Cost | TVT3114241C0 | 125059072 | 117440512 | PT | C | VT | 31 | EL | 142 | 41 | BILL 11 | B11 | S2 | 14 | R00 | ACF11 | LE | 142 |  |
| TVT3114245C0 |  | PT-AF ; Ele(#31)- Final Inspection (Lift) | 5.88d | 2012-08-12 | 2012-08-18 | TVT3114241C0 | 179.5d | 0d | SERVICE LIFTS [7 h]; Cost | TVT3114245C0 | 123044096 | 117440512 | PT | C | VT | 31 | EL | 142 | 45 | BILL 11 | B11 | S2 | 14 | R00 | ACF11 | LE | 142 |  |
| TVT3114247C0 |  | PT-AF ; Ele(#31)- Testing & Commissioning (Lift) | 10d | 2012-08-21 | 2012-09-01 | TVT3114245C0 | 179.5d | 0d | SERVICE LIFTS [30 h]; Cost | TVT3114247C0 | 125059072 | 117440512 | PT | C | VT | 31 | EL | 142 | 47 | BILL 11 | B11 | S2 | 14 | R00 | ACF11 | LE | 142 |  |

| ID | WBS | Activity | Duration | Start | Finish | Predecessors | Total float | Free float | Resources | change id | No.of Wor Days | Duration/Differe | CCAD BUILDING(SET) | CCAD PHASE(SET) | CCAD FLOOR(SET) | CCAD ZONE(SET) | CCAD WORK(SET) | CCAD SECTION(SET) | CCAD SERIAL No.(SET) | CCAD CBS(SET) | CCAD BILL(SET) | CCAD HANDOVER(SET) | CCAD TAG(SET) | CCAD REV(SET) | CCADACF (SET) | CCAD CSA | CCAD SSCF | NEW ACTIVITY ID |
| --- | --- | --- | --- | --- | --- | --- | --- | --- | --- | --- | --- | --- | --- | --- | --- | --- | --- | --- | --- | --- | --- | --- | --- | --- | --- | --- | --- | --- |
|  | EL32 | **Lift (#32)** |  | 2012-04-01 | 2012-08-28 |  |  |  |  |  |  |  |  |  |  |  |  |  |  |  |  |  |  |  |  |  |  |  |
| TVT3214233C0 |  | PT-AF ; Ele(#32)- Install temp. deck (Lift) | 5d | 2012-04-01 | 2012-04-05 | T21CO03399C0, GNHE08101C10 FS+213d | 62.25d | 0d | SERVICE LIFTS [1 h]; Cost | TVT3214233C0 | -256 | 117440512 | PT | C | VT | 32 | EL | 142 | 33 | BILL 11 | B11 | S2 | 13 | R00 | ACF11 | LE | 142 |  |
| TVT3214249C0 |  | PT-AF ; Ele(#32)- Fixing template, plumbing (Lift) | 3d | 2012-04-07 | 2012-04-09 | TVT3214233C0 | 62.25d | 0d | SERVICE LIFTS [30 h]; Cost | TVT3214249C0 |  |  | PT | C | VT | 32 | EL | 142 | 49 | BILL 11 | B11 | S2 | 13 | R00 | ACF11 | LE | 142 |  |
| TVT3214251C0 |  | PT-AF ; Ele(#32)- Build false car (Lift) | 7d | 2012-04-10 | 2012-04-17 | TVT3214249C0 | 62.25d | 0d | SERVICE LIFTS [30 h]; Cost | TVT3214251C0 |  |  | PT | C | VT | 32 | EL | 142 | 51 | BILL 11 | B11 | S2 | 13 | R00 | ACF11 | LE | 142 |  |
| TVT3214253C0 |  | PT-AF ; Ele(#32)- Install brackets, rails & alignment (Lift) | 20d | 2012-04-18 | 2012-05-10 | TVT3214251C0 | 62.25d | 0d | SERVICE LIFTS [359 h]; Cost | TVT3214253C0 | 123044096 | 117440512 | PT | C | VT | 32 | EL | 142 | 53 | BILL 11 | B11 | S2 | 13 | R00 | ACF11 | LE | 142 |  |
| TVT3214255C0 |  | PT-AF ; Ele(#32)- Install Entrance frames & doors (Lift) | 6d | 2012-05-12 | 2012-05-17 | TVT3214253C0 | 62.25d | 0d | SERVICE LIFTS [269 h]; Cost | TVT3214255C0 | 125058816 | 117440512 | PT | C | VT | 32 | EL | 142 | 55 | BILL 11 | B11 | S2 | 13 | R00 | ACF11 | LE | 142 |  |
| TVT3214213C0 |  | PT-AF ; Ele(#32)- Install Machine & Controller (Lift) | 7d | 2012-05-19 | 2012-05-26 | TVT3214255C0 | 182.75d | 0d | SERVICE LIFTS [381 h]; Cost | TVT3214213C0 | 125058816 | 117440512 | PT | C | VT | 32 | EL | 142 | 13 | BILL 11 | B11 | S2 | 13 | R00 | ACF11 | LE | 142 |  |
| TVT3214215C0 |  | PT-AF ; Ele(#32)- Install Governor & rope (Lift) | 7d | 2012-05-27 | 2012-06-03 | TVT3214213C0 | 182.75d | 0d | SERVICE LIFTS [75 h]; Cost | TVT3214215C0 | 125058816 |  | PT | C | VT | 32 | EL | 142 | 15 | BILL 11 | B11 | S2 | 13 | R00 | ACF11 | LE | 142 |  |
| TVT3214217C0 |  | PT-AF ; Ele(#32)- Install counterweight frame (Lift) | 2.88d | 2012-06-04 | 2012-06-06 | TVT3214215C0 | 182.75d | 0d | SERVICE LIFTS [75 h]; Cost | TVT3214217C0 | 125058816 | -16777216 | PT | C | VT | 32 | EL | 142 | 17 | BILL 11 | B11 | S2 | 13 | R00 | ACF11 | LE | 142 |  |
| TVT3214219C0 |  | PT-AF ; Ele(#32)- Hoistway truncking & Wiring (Lift) | 15d | 2012-06-06 | 2012-06-25 | TVT3214217C0 | 182.75d | 0d | SERVICE LIFTS [90 h]; Cost | TVT3214219C0 | 123044096 |  | PT | C | VT | 32 | EL | 142 | 19 | BILL 11 | B11 | S2 | 13 | R00 | ACF11 | LE | 142 |  |
| TVT3214221C0 |  | PT-AF ; Ele(#32)- Machine room wiring (Lift) | 7d | 2012-06-25 | 2012-07-03 | TVT3214219C0 | 182.75d | 0d | SERVICE LIFTS [15 h]; Cost | TVT3214221C0 |  | 117440512 | PT | C | VT | 32 | EL | 142 | 21 | BILL 11 | B11 | S2 | 13 | R00 | ACF11 | LE | 142 |  |
| TVT3214223C0 |  | PT-AF ; Ele(#32)- Build car frame (Lift) | 7d | 2012-07-03 | 2012-07-11 | TVT3214221C0 | 182.75d | 0d | SERVICE LIFTS [142 h]; Cost | TVT3214223C0 | 125058816 | 117440512 | PT | C | VT | 32 | EL | 142 | 23 | BILL 11 | B11 | S2 | 13 | R00 | ACF11 | LE | 142 |  |
| TVT3214225C0 |  | PT-AF ; Ele(#32)- Main roping (Lift) | 6.88d | 2012-07-11 | 2012-07-19 | TVT3214223C0 | 184.88d | 0d | SERVICE LIFTS [75 h]; Cost | TVT3214225C0 | -65536 |  | PT | C | VT | 32 | EL | 142 | 25 | BILL 11 | B11 | S2 | 13 | R00 | ACF11 | LE | 142 |  |
| TVT3214231C0 |  | PT-AF ; Ele(#32)- Build cab & Wiring (Lift) | 15d | 2012-07-11 | 2012-07-29 | TVT3214223C0 | 182.75d | 0d | SERVICE LIFTS [135 h]; Cost | TVT3214231C0 | 125058816 |  | PT | C | VT | 32 | EL | 142 | 31 | BILL 11 | B11 | S2 | 13 | R00 | ACF11 | LE | 142 |  |
| TVT3214227C0 |  | PT-AF ; Ele(#32)- Loading counterweights (Lift) | 3d | 2012-07-19 | 2012-07-23 | TVT3214225C0 | 184.88d | 0d | SERVICE LIFTS [15 h]; Cost | TVT3214227C0 | 125058816 | -16777216 | PT | C | VT | 32 | EL | 142 | 27 | BILL 11 | B11 | S2 | 13 | R00 | ACF11 | LE | 142 |  |
| TVT3214229C0 |  | PT-AF ; Ele(#32)- Dismantling false car (Lift) | 3d | 2012-07-23 | 2012-07-26 | TVT3214227C0 | 184.88d | 2.12d | SERVICE LIFTS [7 h]; Cost | TVT3214229C0 | 125058816 |  | PT | C | VT | 32 | EL | 142 | 29 | BILL 11 | B11 | S2 | 13 | R00 | ACF11 | LE | 142 |  |
| TVT3214239C0 |  | PT-AF ; Ele(#32)- Permanent power supply required (Lift) | 1d | 2012-07-28 | 2012-07-29 | TVT3214229C0 FF, TVT3214231C0 FF | 182.75d | 0d | SERVICE LIFTS [1 h]; Cost | TVT3214239C0 | 123044096 | 1593835520 | PT | C | VT | 32 | EL | 142 | 39 | BILL 11 | B11 | S2 | 13 | R00 | ACF11 | LE | 142 |  |
| TVT3214241C0 |  | PT-AF ; Ele(#32)- Adjusting (Lift) | 14.88d | 2012-07-29 | 2012-08-15 | TVT3214239C0 | 182.75d | 0d | SERVICE LIFTS [45 h]; Cost | TVT3214241C0 | 1598662912 | -16777216 | PT | C | VT | 32 | EL | 142 | 41 | BILL 11 | B11 | S2 | 13 | R00 | ACF11 | LE | 142 |  |
| TVT3214243C0 |  | PT-AF ; Ele(#32)- Temporary Inspection (Lift) | 3d | 2012-08-15 | 2012-08-21 | TVT3214241C0 | 182.75d | 0d | SERVICE LIFTS [7 h]; Cost | TVT3214243C0 | 123044096 | 117440512 | PT | C | VT | 32 | EL | 142 | 43 | BILL 11 | B11 | S2 | 13 | R00 | ACF11 | LE | 142 |  |
| TVT3214247C0 |  | PT-AF ; Ele(#32)- Testing & Commissioning (Lift) | 6d | 2012-08-21 | 2012-08-28 | TVT3214243C0 | 182.75d | 3.25d | SERVICE LIFTS [45 h]; Cost | TVT3214247C0 | 125058816 |  | PT | C | VT | 32 | EL | 142 | 47 | BILL 11 | B11 | S2 | 13 | R00 | ACF11 | LE | 142 |  |
|  | EL33 | **Lift (#33)** |  | 2012-04-01 | 2012-08-05 |  |  |  |  |  |  |  |  |  |  |  |  |  |  |  |  |  |  |  |  |  |  |  |
| TVT3314233C0 |  | PT-AF ; Ele(#33)- Install temp. deck (Lift) | 5d | 2012-04-01 | 2012-04-05 | T21CO03399C0, GNHE08101C10 FS+213d | 62.25d | 0d | SERVICE LIFTS [15 h]; Cost | TVT3314233C0 |  | 117440512 | PT | C | VT | 33 | EL | 142 | 33 | BILL 11 | B11 | S2 | 12 | R00 | ACF11 | LE | 142 |  |
| TVT3314239C0 |  | PT-AF ; Ele(#33)- Fixing template, plumbing (Lift) | 3d | 2012-04-07 | 2012-04-09 | TVT3314233C0 | 62.25d | 0d | SERVICE LIFTS [15 h]; Cost | TVT3314239C0 | 123044096 | 1593835520 | PT | C | VT | 33 | EL | 142 | 39 | BILL 11 | B11 | S2 | 12 | R00 | ACF11 | LE | 142 |  |
| TVT3314241C0 |  | PT-AF ; Ele(#33)- Build false car (Lift) | 7d | 2012-04-10 | 2012-04-17 | TVT3314239C0 | 62.25d | 0d | SERVICE LIFTS [30 h]; Cost | TVT3314241C0 | 125058816 |  | PT | C | VT | 33 | EL | 142 | 41 | BILL 11 | B11 | S2 | 12 | R00 | ACF11 | LE | 142 |  |
| TVT3314243C0 |  | PT-AF ; Ele(#33)- Install brackets, rails & alignment (Lift) | 20d | 2012-04-18 | 2012-05-10 | TVT3314241C0 | 62.25d | 0d | SERVICE LIFTS [359 h]; Cost | TVT3314243C0 | 125058816 |  | PT | C | VT | 33 | EL | 142 | 43 | BILL 11 | B11 | S2 | 12 | R00 | ACF11 | LE | 142 |  |
| TVT3314245C0 |  | PT-AF ; Ele(#33)- Install Entrance frames & doors (Lift) | 6d | 2012-05-12 | 2012-05-17 | TVT3314243C0 | 62.25d | 0d | SERVICE LIFTS [269 h]; Cost | TVT3314245C0 | 123044096 | 117440512 | PT | C | VT | 33 | EL | 142 | 45 | BILL 11 | B11 | S2 | 12 | R00 | ACF11 | LE | 142 |  |
| TVT3314213C0 |  | PT-AF ; Ele(#33)- Install Machine & Controller (Lift) | 7d | 2012-05-19 | 2012-05-26 | TVT3314245C0 | 172.13d | 0d | SERVICE LIFTS [381 h]; Cost | TVT3314213C0 |  |  | PT | C | VT | 33 | EL | 142 | 13 | BILL 11 | B11 | S2 | 12 | R00 | ACF11 | LE | 142 |  |
| TVT3314215C0 |  | PT-AF ; Ele(#33)- Install Governor & rope (Lift) | 7d | 2012-05-27 | 2012-06-03 | TVT3314213C0 | 172.13d | 0d | SERVICE LIFTS [75 h]; Cost | TVT3314215C0 | 538976256 |  | PT | C | VT | 33 | EL | 142 | 15 | BILL 11 | B11 | S2 | 12 | R00 | ACF11 | LE | 142 |  |
| TVT3314217C0 |  | PT-AF ; Ele(#33)- Install counterweight frame (Lift) | 2.88d | 2012-06-04 | 2012-06-06 | TVT3314215C0 | 172.13d | 0d | SERVICE LIFTS [75 h]; Cost | TVT3314217C0 | 123044096 |  | PT | C | VT | 33 | EL | 142 | 17 | BILL 11 | B11 | S2 | 12 | R00 | ACF11 | LE | 142 |  |
| TVT3314219C0 |  | PT-AF ; Ele(#33)- Hoistway truncking & Wiring (Lift) | 15d | 2012-06-06 | 2012-06-25 | TVT3314217C0 | 172.13d | 0d | SERVICE LIFTS [90 h]; Cost | TVT3314219C0 | 125058816 | 268435456 | PT | C | VT | 33 | EL | 142 | 19 | BILL 11 | B11 | S2 | 12 | R00 | ACF11 | LE | 142 |  |
| TVT3314221C0 |  | PT-AF ; Ele(#33)- Machine room wiring (Lift) | 7d | 2012-06-25 | 2012-07-03 | TVT3314219C0 | 172.13d | 0d | SERVICE LIFTS [15 h]; Cost | TVT3314221C0 | 123044096 |  | PT | C | VT | 33 | EL | 142 | 21 | BILL 11 | B11 | S2 | 12 | R00 | ACF11 | LE | 142 |  |
| TVT3314223C0 |  | PT-AF ; Ele(#33)- Build car frame (Lift) | 7d | 2012-07-03 | 2012-07-11 | TVT3314221C0 | 172.13d | 0d | SERVICE LIFTS [142 h]; Cost | TVT3314223C0 |  | 117440512 | PT | C | VT | 33 | EL | 142 | 23 | BILL 11 | B11 | S2 | 12 | R00 | ACF11 | LE | 142 |  |
| TVT3314225C0 |  | PT-AF ; Ele(#33)- Main roping (Lift) | 6.88d | 2012-07-11 | 2012-07-19 | TVT3314223C0 | 174.25d | 0d | SERVICE LIFTS [75 h]; Cost | TVT3314225C0 | 125058816 |  | PT | C | VT | 33 | EL | 142 | 25 | BILL 11 | B11 | S2 | 12 | R00 | ACF11 | LE | 142 |  |
| TVT3314231C0 |  | PT-AF ; Ele(#33)- Build cab & Wiring (Lift) | 15d | 2012-07-11 | 2012-07-29 | TVT3314223C0 | 172.13d | 0d | SERVICE LIFTS [135 h]; Cost | TVT3314231C0 | 125058816 | -16777216 | PT | C | VT | 33 | EL | 142 | 31 | BILL 11 | B11 | S2 | 12 | R00 | ACF11 | LE | 142 |  |
| TVT3314227C0 |  | PT-AF ; Ele(#33)- Loading counterweights (Lift) | 3d | 2012-07-19 | 2012-07-23 | TVT3314225C0 | 174.25d | 0d | SERVICE LIFTS [15 h]; Cost | TVT3314227C0 | 262144 | 117440512 | PT | C | VT | 33 | EL | 142 | 27 | BILL 11 | B11 | S2 | 12 | R00 | ACF11 | LE | 142 |  |
| TVT3314229C0 |  | PT-AF ; Ele(#33)- Dismantling false car (Lift) | 3d | 2012-07-23 | 2012-07-26 | TVT3314227C0 | 174.25d | 2.12d | SERVICE LIFTS [7 h]; Cost | TVT3314229C0 | 125058816 |  | PT | C | VT | 33 | EL | 142 | 29 | BILL 11 | B11 | S2 | 12 | R00 | ACF11 | LE | 142 |  |
| TVT3314247C0 |  | PT-AF ; Ele(#33)- Inspection, Testing & Commis (Lift) | 6d | 2012-07-29 | 2012-08-05 | TVT3314227C0, TVT3314229C0, TVT3314231C0 | 172.13d | 21.12d | SERVICE LIFTS [97 h]; Cost | CVT3914247C0 |  |  | PT | C | VT | 33 | EL | 142 | 47 | BILL 11 | B11 | S2 | 12 | R00 | ACF11 | LE | 142 | 1531 |

| ID | WBS | Activity | Duration | Start | Finish | Predecessors | Total float | Free float | Resources | change id | CCAD BUILDING(SET) | CCAD PHASE(SET) | CCAD FLOOR(SET) | CCAD ZONE(SET) | CCAD WORK(SET) | CCAD SECTION(SET) | CCAD SERIAL No.(SET) | CCAD CBS(SET) | CCAD BILL(SET) | CCAD HANDOVER(SET) | CCAD TAG(SET) | CCAD REV(SET) | CCADACF (SET) | CCAD SSCF | CCAD DIVISION(SET) | CCAD Carpark district code(set) | CCAD CSA |
| --- | --- | --- | --- | --- | --- | --- | --- | --- | --- | --- | --- | --- | --- | --- | --- | --- | --- | --- | --- | --- | --- | --- | --- | --- | --- | --- | --- |
|  | CZ | **Controlled Zone(L10~16)** |  | 2013-02-21 | 2013-03-20 |  |  |  |  |  |  |  |  |  |  |  |  |  |  |  |  |  |  |  |  |  |  |
| TGNCZ01010G0 |  | PT-GN ; Minor Punch List (Controlled Zone) | 23d | 2013-02-21 | 2013-03-19 | MGNCZ00111M0 | 39d | 0d | TESTING & COMMISSIONING [567 h]; Cost | TGNCZ01010G0 | PT | G | GN | CZ | SC | 010 | 10 | BILL 10 | B10 | S2 | PI | R00 | ACF07 | 010 |  |  |  |
| TGNCZ01810G0 |  | PT-GN ; Medical Equipment Installation , T&C by 3rd Party (Controlled Zone) | 0d | 2013-02-21 | 2013-02-21 | MGNCZ00111M0 | 62d | 23d | Cost |  | PT |  |  | CZ |  |  |  |  | B10 |  |  | R00 |  | GEN |  |  |  |
| TGNCZ01811G0 |  | PT-GN ; Fire Alarm , PMCS & EMCS Testing & Commissioning (Controlled Zone) | 23d | 2013-02-21 | 2013-03-19 | MGNCZ00111M0 | 39d | 0d | TESTING & COMMISSIONING [3399 h]; Cost | TGNCZ01811G0 | PT | G | GN | CZ | SC | 018 | 11 | BILL 10 | B10 | S2 | 01 | R00 | ACF07 | 018 |  |  |  |
| TGNCZ11010G0 |  | PT-GN ; Loose FF & E (Controlled Zone) | 0d | 2013-02-21 | 2013-02-21 | MGNCZ00111M0 | 62d | 23d | Cost | TGNCZ11010G0 | PT | G | GN | CZ | FI | 110 | 10 | BILL 10 | B10 | S2 | 02 | R00 | ACF08 | a |  |  |  |
| TGNCZ11020G0 |  | PT-GN ; Wall Mounted / Sensitive Equipment Install (Controlled Zone) | 0d | 2013-02-21 | 2013-02-21 | MGNCZ00111M0 | 62d | 23d | Cost | TGNCZ11020G0 | PT | G | GN | CZ | SC | 110 | 20 | BILL 10 | B10 | S2 | 02 | R00 | ACF08 | d |  |  |  |
| TGNCZ01100G0 |  | PT-GN ; Cleaning & Final Inspection (Controlled Zone) | 0d | 2013-03-20 | 2013-03-20 | TGNCZ01810G0, TGNCZ11010G0, TGNCZ01010G0, TGNCZ11020G0, TGNCZ01811G0 | 39d | 36.12d | Cost | TGNCZ01020G0 | PT | G | GN | CZ | SC | 010 | 20 | BILL 10 | B10 | S3 | IN | R00 | ACF07 | 010 |  |  |  |
|  | CZ1 | **Controlled Zone(L17~20)** |  | 2013-04-15 | 2013-06-16 |  |  |  |  |  |  |  |  |  |  |  |  |  |  |  |  |  |  |  |  |  |  |
| TGNCZ01020G0 |  | PT-GN ; Minor Punch List (Controlled Zone) | 26d | 2013-04-15 | 2013-05-15 | MGNCZ00113M0 | 15.65d | 0d | TESTING & COMMISSIONING [567 h]; Cost | TGNCZ01020G0 | PT | G | GN | CZ | SC | 010 | 20 | BILL 10 | B10 | S3 | PI | R00 | ACF07 | 010 |  |  |  |
| TGNCZ01820G0 |  | PT-GN ; Medical Equipment Installation , T&C by 3rd Party (Controlled Zone) | 0d | 2013-04-15 | 2013-04-15 | MGNCZ00113M0 | 41.65d | 26d | Cost |  | PT |  |  | CZ |  |  |  |  | B10 |  |  | R00 |  | GEN |  |  |  |
| TGNCZ01821G0 |  | PT-GN ; Fire Alarm , PMCS & EMCS Testing & Commissioning (Controlled Zone) | 26d | 2013-04-15 | 2013-05-15 | MGNCZ00113M0 | 15.65d | 0d | TESTING & COMMISSIONING [3399 h]; Cost | TGNCZ01821G0 | PT | G | GN | CZ | SC | 018 | 21 | BILL 10 | B10 | S3 | 01 | R00 | ACF07 | 018 |  |  |  |
| TGNCZ11030G0 |  | PT-GN ; Loose FF & E (Controlled Zone) | 0d | 2013-04-15 | 2013-04-15 | MGNCZ00113M0 | 41.65d | 26d | Cost | TGNCZ11030G0 | PT | G | GN | CZ | FI | 110 | 30 | BILL 10 | B10 | S3 | 02 | R00 | ACF08 | a |  |  |  |
| TGNCZ11040G0 |  | PT-GN ; Wall Mounted / Sensitive Equipment Install (Controlled Zone) | 0d | 2013-04-15 | 2013-04-15 | MGNCZ00113M0 | 41.65d | 26d | Cost | TGNCZ11040G0 | PT | G | GN | CZ | SC | 110 | 40 | BILL 10 | B10 | S3 | 02 | R00 | ACF08 | d |  |  |  |
| TGNCZ01090G0 |  | PT-GN ; Cleaning & Final Inspection (Controlled Zone) | 26d | 2013-05-15 | 2013-06-16 | TGNCZ11030G0, TGNCZ01020G0, TGNCZ11040G0, TGNCZ01821G0, TGNCZ01820G0 | 15.65d | 5.65d | TESTING & COMMISSIONING [567 h]; Cost | TGNCZ01020G0 | PT | G | GN | CZ | SC | 010 | 20 | BILL 10 | B10 | S3 | IN | R00 | ACF07 | 010 |  |  |  |
|  | CA | **Carpark** |  | 2010-05-24 | 2013-04-11 |  |  |  |  |  |  |  |  |  |  |  |  |  |  |  |  |  |  |  |  |  |  |
|  | OA | **Overall** |  |  |  |  |  |  |  |  |  |  |  |  |  |  |  |  |  |  |  |  |  |  |  |  |  |
|  | 1 | **CAR PARK - Staircore Cladding Works** |  | 2011-11-03 | 2012-08-01 |  |  |  |  |  |  |  |  |  |  |  |  |  |  |  |  |  |  |  |  |  |  |
| LP3CO04409C0 |  | PA-P3 ; S2 Stone Cladding (Car Park Area South stairs F6 to F9 - to be ST11) | 28d | 2011-11-03 | 2011-12-12 | OGNMU00039S0, PP3EP09901C30, PP3EP09901C20, PP3EP09901C10, PAF0605509C0, PAF0705509C0, PAF0805509C0, PAF0905509C0 | 376.34d | 0d | FACADE NATURAL STONE PANEL [4636.8 h]; Cost | PAFCO04407C0 | PA | C | P3 | CO | FA | 044 | 09 | BILL 2 | B02 | S2 | FS2 | R00 | ACF05 | 044 | 04 | S | FA |
| LP2CO04407C0 |  | PA-P2 ; S2 Stone Cladding (Car Park Area South stairs F6 to F9 - to be ST11) | 28d | 2011-11-14 | 2011-12-19 | LP3CO04409C0 SS+6d, LP3CO04409C0 FF | 376.34d | 0d | FACADE NATURAL STONE PANEL [4636.8 h]; Cost | PAFCO04407C0 | PA | C | P2 | CO | FA | 044 | 07 | BILL 2 | B02 | S2 | FS2 | R00 | ACF05 | 044 | 04 | S | FA |
| LP1CO04409C0 |  | PA-P1 ; S2 Stone Cladding (Car Park Area South stairs F6 to F9 - to be ST11) | 28d | 2011-11-21 | 2011-12-26 | LP2CO04407C0 SS+6d, LP2CO04407C0 FF | 376.34d | 0d | FACADE NATURAL STONE PANEL [4636.8 h]; Cost | PAFCO04407C0 | PA | C | P1 | CO | FA | 044 | 09 | BILL 2 | B02 | S2 | FS2 | R00 | ACF05 | 044 | 04 | S | FA |
| LGLCO04407C0 |  | PA-GL ; S2 Stone Cladding (Car Park Area South stairs F6 to F9 - to be ST11) | 28d | 2011-11-29 | 2012-01-03 | LP1CO04409C0 SS+6d, LP1CO04409C0 FF | 376.34d | 357.69d | FACADE NATURAL STONE PANEL [4636.8 h]; Cost | PAFCO04407C0 | PA | C | GL | CO | FA | 044 | 07 | BILL 2 | B02 | S2 | FS2 | R00 | ACF05 | 044 | 04 | S | FA |
| LP3CO04409C10 |  | PA-P3 ; S2 Stone Cladding (Car Park Area North stairs F1 to F4 & F10 to F12 - to be ST11) | 0d | 2012-07-11 | 2012-07-11 | OGNMU00039S0, PAF1205509C0, PAF0105509C0, PAF0205509C0, PAF1005509C0, PAF1105509C0, PAF0405509C0, PAF0305509C0, PP3BP09901C10, PP3BP09901C20, PP3BP09901C30, PP3AP09901C10, PP3AP09901C20 | 197.24d | 0d | Cost | PAFCO04407C0 | PA | C | P3 | CO | FA | 044 | 09 | BILL 2 | B02 | S2 | FS2 | R00 | ACF05 | 044 | 04 | S |  |
| LP2CO04407C10 |  | PA-P2 ; S2 Stone Cladding (Car Park Area North stairs F1 to F4 & F10 to F12 - to be ST11) | 0d | 2012-07-18 | 2012-07-18 | LP3CO04409C10 SS+6d, LP3CO04409C10 FF | 197.24d | 0d | Cost | PAFCO04407C0 | PA | C | P2 | CO | FA | 044 | 07 | BILL 2 | B02 | S2 | FS2 | R00 | ACF05 | 044 | 04 | S |  |
| LP1CO04409C10 |  | PA-P1 ; S2 Stone Cladding (Car Park Area North stairs F1 to F4 & F10 to F12 - to be ST11) | 0d | 2012-07-25 | 2012-07-25 | LP2CO04407C10 SS+6d, LP2CO04407C10 FF | 197.24d | 0d | Cost | PAFCO04407C0 | PA | C | P1 | CO | FA | 044 | 09 | BILL 2 | B02 | S2 | FS2 | R00 | ACF05 | 044 | 04 | S |  |
| LGLCO04407C10 |  | PA-GL ; S2 Stone Cladding (Car Park Area North stairs F1 to F4 & F10 to F12 - to be ST11) | 0d | 2012-08-01 | 2012-08-01 | LP1CO04409C10 SS+6d, LP1CO04409C10 FF | 197.24d | 178.59d | Cost | PAFCO04407C0 | PA | C | GL | CO | FA | 044 | 07 | BILL 2 | B02 | S2 | FS2 | R00 | ACF05 | 044 | 04 | S |  |

| ID | WBS | Activity | Duration | Start | Finish | Predecessors | Complete | Remaining | Planned start | Planned finish | Total float | Free float | Resources | change id | CCAD BUILDING(SET) | CCAD PHASE(SET) | CCAD FLOOR(SET) | CCAD ZONE(SET) | CCAD WORK(SET) | CCAD SECTION(SET) | CCAD SERIAL No.(SET) | CCAD BILL(SET) | CCAD HANDOVER(SET) | CCAD TAG(SET) | CCAD REV(SET) | CCADACF (SET) | CCAD CSA | CCAD SSCF | IDDD | RENZ CODE | RENZ % COMPLETE | P_811 | P_711 | CCAD Carpark code(SET) | Claimed This Month | July2011 Target% Complete |
| --- | --- | --- | --- | --- | --- | --- | --- | --- | --- | --- | --- | --- | --- | --- | --- | --- | --- | --- | --- | --- | --- | --- | --- | --- | --- | --- | --- | --- | --- | --- | --- | --- | --- | --- | --- | --- |
|  | AS | **CAR PARK - Stairs F1 to F14** |  | 2011-10-01 | 2012-06-30 |  |  |  |  |  |  |  |  |  |  |  |  |  |  |  |  |  |  |  |  |  |  |  |  |  |  |  |  |  |  |  |
| PAFT2205509C1 |  | PA-AF ; Steel Staircase Installation (Stair # A22) (2F to 3F) | 10d | 2011-10-01 | 2011-10-11 | UP3S105509C0 SS |  |  |  |  | 447d | 420.38d | STRUCTURAL STEEL [9 T(Fe)]; Cost | IP3SE03305C0 | PA | C | AF | GEN | SW | 055 | 05 | B02 | S1 | 01 | R00 | ACF03 | ST | 055 |  |  |  |  |  |  |  |  |
| PAF0305509C0 |  | PA-AF; Steel Staircase Installation (Stair # F03) (P3 to GF) | 0d | 2011-10-16 | 2011-10-16 | PGLS103391C100 FS+14d, PAF0405509C0 SS |  |  |  |  | 421d | 223.76d | Cost | IP3SE03305C0 | PA | C | AF | GEN | SW | 055 | 05 | B02 | S1 | 01 | R00 | ACF03 | ST | 055 |  |  |  |  |  |  |  |  |
| PAF0405509C0 |  | PA-AF; Steel Staircase Installation (Stair # F04) (P3 to GF) | 0d | 2011-10-16 | 2011-10-16 | PGLS103391C120 FS+14d |  |  |  |  | 421d | 0d | Cost | IP3SE03305C0 | PA | C | AF | GEN | SW | 055 | 05 | B02 | S1 | 01 | R00 | ACF03 | ST | 055 |  |  |  |  |  |  |  |  |
| PAF1105509C0 |  | PA-AF; Steel Staircase Installation (Stair # F11) (P3 to P2) | 0d | 2011-10-19 | 2011-10-19 | PP1SX03371C0 FS+14d |  |  |  |  | 417.9d | 220.66d | Cost | IP3SE03305C0 | PA | C | AF | GEN | SW | 055 | 05 | B02 | S1 | 01 | R00 | ACF03 | ST | 055 |  |  |  |  |  |  |  |  |
| PAF1005509C0 |  | PA-AF; Steel Staircase Installation (Stair # F10) (P3 to P2) | 0d | 2011-10-22 | 2011-10-22 | PP1S903372C0 FS+14d |  |  |  |  | 415.8d | 218.56d | Cost | IP3SE03305C0 | PA | C | AF | GEN | SW | 055 | 05 | B02 | S1 | 01 | R00 | ACF03 | ST | 055 |  |  |  |  |  |  |  |  |
| PAF0605509C0 |  | PA-AF; Steel Staircase Installation (Stair # F06) (P3 to GF) | 0d | 2011-11-03 | 2011-11-03 | PGLS203392C0 FS+14d, PAF0705509C0 SS |  |  |  |  | 376.34d | 0d | Cost | IP3SE03305C0 | PA | C | AF | GEN | SW | 055 | 05 | B02 | S1 | 01 | R00 | ACF03 | ST | 055 |  |  |  |  |  |  |  |  |
| PAF0705509C0 |  | PA-AF; Steel Staircase Installation (Stair # F07) (P3 to GF) | 0d | 2011-11-03 | 2011-11-03 | PGLS103391C60 FS+14d |  |  |  |  | 376.34d | 0d | Cost | IP3SE03305C0 | PA | C | AF | GEN | SW | 055 | 05 | B02 | S1 | 01 | R00 | ACF03 | ST | 055 |  |  |  |  |  |  |  |  |
| PAF0805509C0 |  | PA-AF; Steel Staircase Installation (Stair # F08) (P3 to GF) | 0d | 2011-11-03 | 2011-11-03 | PGLS103391C40 FS+14d, PAF0705509C0 SS |  |  |  |  | 376.34d | 0d | Cost | IP3SE03305C0 | PA | C | AF | GEN | SW | 055 | 05 | B02 | S1 | 01 | R00 | ACF03 | ST | 055 |  |  |  |  |  |  |  |  |
| PAF0905509C0 |  | PA-AF; Steel Staircase Installation (Stair # F09) (P3 to GF) | 0d | 2011-11-03 | 2011-11-03 | PGLS103391C20A FS+14d, PAF0705509C0 SS |  |  |  |  | 376.34d | 0d | Cost | IP3SE03305C0 | PA | C | AF | GEN | SW | 055 | 05 | B02 | S1 | 01 | R00 | ACF03 | ST | 055 |  |  |  |  |  |  |  |  |
| PAF1405509C0 |  | PA-AF; Steel Staircase Installation (Stair # F14) (P3 to GF) | 0d | 2012-01-04 | 2012-01-04 | CR5CO04415C0 |  |  |  |  | 179.4d | 0d | Cost | IP3SE03305C0 | PA | C | AF | GEN | SW | 055 | 05 | B02 | S1 | 01 | R00 | ACF03 | ST | 055 |  |  |  |  |  |  |  |  |
| PAF1305509C0 |  | PA-AF; Steel Staircase Installation (Stair # F13) (P3 to GF) | 0d | 2012-01-12 | 2012-01-12 | DR5CO04447C0 |  |  |  |  | 258.7d | 122.45d | Cost | IP3SE03305C0 | PA | C | AF | GEN | SW | 055 | 05 | B02 | S1 | 01 | R00 | ACF03 | ST | 055 |  |  |  |  |  |  |  |  |
| PAF1205509C0 |  | PA-AF; Steel Staircase Installation (Stair # F12) (P3 to P1) | 0d | 2012-05-28 | 2012-05-28 | PGLS103391C260 FS+14d, PGLS103392R02 FS+14d |  |  |  |  | 234.85d | 37.61d | Cost | IP3SE03305C0 | PA | C | AF | GEN | SW | 055 | 05 | B02 | S1 | 01 | R00 | ACF03 | ST | 055 |  |  |  |  |  |  |  |  |
| PAF0105509C0 |  | PA-AF; Steel Staircase Installation (Stair # F01) (P3 to GF) | 0d | 2012-06-30 | 2012-06-30 | PGLS103391C170 FS+14d, PGLS103394R02 FS+14d, PGLS103391C160 FS+14d |  |  |  |  | 207.98d | 10.75d | Cost | IP3SE03305C0 | PA | C | AF | GEN | SW | 055 | 05 | B02 | S1 | 01 | R00 | ACF03 | ST | 055 |  |  |  |  |  |  |  |  |
| PAF0205509C0 |  | PA-AF; Steel Staircase Installation (Stair # F02) (P3 to GF) | 0d | 2012-06-30 | 2012-06-30 | PGLS103391C170 FS+14d, PGLS103394R02 FS+14d |  |  |  |  | 207.98d | 10.75d | Cost | IP3SE03305C0 | PA | C | AF | GEN | SW | 055 | 05 | B02 | S1 | 01 | R00 | ACF03 | ST | 055 |  |  |  |  |  |  |  |  |
|  | FN | **Structural Works** |  | 2010-05-24 | 2012-09-09 |  |  |  |  |  |  |  |  |  |  |  |  |  |  |  |  |  |  |  |  |  |  |  |  |  |  |  |  |  |  |  |
|  | 26 | **CAR PARK - D&T Perimeter Wall** |  | 2011-01-20 | 2011-10-04 |  |  |  |  |  |  |  |  |  |  |  |  |  |  |  |  |  |  |  |  |  |  |  |  |  |  |  |  |  |  |  |
| PP3S103331C200 |  | PA-P3 ; RC Wall at P3 level adjacent to D&T/Clinic | 14d | 2011-01-20 A | 2011-10-01 | MGNMI00101M0 FS+100d | 95% | 0.7d | 2011-02-28 | 2011-03-15 | 23.88d | 0d | CONCRETE [645.48 m3]; CONCRETE [25656 h]; Cost | PP3S103331C0 | PA | C | P3 | RC | CT | 033 | 31 | B02 |  | 06 | R00 | ACF02 |  | 033 | PP3XA03331C0 | NEW | 35 | 95 | 90 | SW |  |  |
| PP2S103331C210 |  | PA-P2 ; RC Beam at P2 level adjacent to D&T/Clinic | 7d | 2011-03-09 A | 2011-10-02 | PP3S103331C200 | 90% | 0.7d | 2011-03-16 | 2011-03-23 | 23.88d | 0d | CONCRETE [107.6 m3]; CONCRETE [4272 h]; Cost |  | PA | C | P2 | RC | CT | 033 |  | B02 |  | 07 | R00 | ACF03 | PT | 033 |  | NEW | 30 |  |  | SW | 1687105.98 |  |
| PP2S103331C220 |  | PA-P2 ; RC Wall at P2 level adjacent to D&T/Clinic | 14d | 2011-03-17 A | 2011-10-03 | PP2S103331C210 | 95% | 0.7d | 2011-03-24 | 2011-04-09 | 23.88d | 0d | CONCRETE [947.3 m3]; CONCRETE [37656 h]; Cost |  | PA | C | P2 | RC | CT | 033 |  | B02 |  | 05 | R00 | ACF03 |  | 033 |  | NEW |  | 95 | 90 | SW |  |  |
| PP1S103331C240 |  | PA-P1 ; RC Wall at P1 level adjacent to D&T/Clinic | 14d | 2011-06-07 A | 2011-08-30 A | PP1S103331C230 | 100% |  | 2011-06-30 | 2011-07-16 |  |  | CONCRETE [770.8 m3]; CONCRETE [30640 h]; Cost |  | PA | C | P1 | RC | CT | 033 |  | B02 |  | 05 | R00 | ACF03 |  | 033 |  | NEW |  | 100 | 90 | SW |  |  |
| PP1S103331C230 |  | PA-P1 ; RC Beam at P1 level adjacent to D&T/Clinic | 7d | 2011-06-08 A | 2011-10-03 | PP2S103331C220 | 90% | 0.7d | 2011-07-04 | 2011-07-11 | 23.88d | 0d | CONCRETE [107.6 m3]; CONCRETE [4272 h]; Cost |  | PA | C | P1 | RC | CT | 033 |  | B02 |  | 07 | R00 | ACF03 | PT | 033 |  | NEW |  |  |  | SW | 1554750.06 |  |
| PGLS103331C250 |  | PA-GR; RC Beam at GF level adjacent to D&T/Clinic | 7d | 2011-06-20 A | 2011-10-04 | PP1S103331C240 | 90% | 0.7d | 2011-07-17 | 2011-07-24 | 23.88d | 0d | CONCRETE [215.3 m3]; CONCRETE [8560 h]; Cost |  | PA | C | GL | RC | CT | 033 |  | B02 |  | 07 | R00 | ACF03 | PT | 033 |  | NEW |  |  |  | SW |  |  |
|  | 27 | **CAR PARK - POUR STRIPS** |  | 2011-06-01 | 2012-08-07 |  |  |  |  |  |  |  |  |  |  |  |  |  |  |  |  |  |  |  |  |  |  |  |  |  |  |  |  |  |  |  |
| PP2S103331C240 |  | PA-P2 ; Pour Strip bet. Zones S1-1B & S1-2B | 7d | 2011-06-01 A | 2011-06-09 A | PP2S103351C20 FS+21d, PP2S103351C40 FS+21d | 100% |  | 2011-06-01 | 2011-06-08 |  |  | CONCRETE [328 h]; CONCRETE [8.23 m3]; Cost |  | PA | C | P2 |  | CT | 033 |  | B02 |  | 07 | R00 | ACF03 | PT | 033 |  | NEW |  |  |  |  | 23617.81 |  |
| PP2S103331C230 |  | PA-P2 ; Pour Strip bet. Zones S1-1A & S1-2A | 7d | 2011-06-02 A | 2011-06-11 A | PP2S103351C10 FS+21d, PP2S103351C30 FS+21d | 100% |  | 2011-07-24 | 2011-07-31 |  |  | CONCRETE [168 h]; CONCRETE [4.11 m3]; Cost |  | PA | C | P2 |  | CT | 033 |  | B02 |  | 07 | R00 | ACF03 | PT | 033 |  | NEW |  |  |  |  | 9523.31 |  |
| PP1S103331C250 |  | PA-P1 ; Pour Strip bet. Zones S1-1B & S1-2B | 7d | 2011-06-07 A | 2011-06-14 A | PP1S103371C20 FS+21d, PP1S103371C40 FS+21d | 100% |  |  |  |  |  | CONCRETE [328 h]; CONCRETE [8.23 m3]; Cost |  | PA | C | P1 |  | CT | 033 |  | B02 |  | 07 | R00 | ACF03 | PT | 033 |  | NEW |  |  |  |  | 23416.56 |  |
| PP2S103331C260 |  | PA-P2 ; Pour Strip bet. Zones S2-1A & S2-3 | 7.08d | 2011-06-09 A | 2011-06-16 A | PP2S103351C50 FS+21d, PP2S203353C0 FS+21d | 100% |  | 2011-06-30 | 2011-07-09 |  |  | CONCRETE [184 h]; CONCRETE [4.39 m3]; Cost |  | PA | C | P2 |  | CT | 033 |  | B02 |  | 07 | R00 | ACF03 | PT | 033 |  | NEW |  |  |  |  | 11808.9 |  |
| PP1S103331C270 |  | PA-P1 ; Pour Strip bet. Zones S2-1A & S2-3 | 7d | 2011-06-14 A | 2011-06-20 A | PP1S103371C50 FS+21d, PP1S203373C0 FS+21d, PP2S103331C260 | 100% |  | 2011-07-25 | 2011-08-02 |  |  | CONCRETE [72 h]; CONCRETE [1.92 m3]; Cost |  | PA | C | P1 |  | CT | 033 |  | B02 |  | 07 | R00 | ACF03 | PT | 033 |  | NEW |  |  |  |  | 11894.13 |  |
| PGLS103331C260 |  | PA-GR ; Pour Strip bet. Zones S1-1B & S1-2B | 7d | 2011-06-16 A | 2011-06-21 A | PGLS103391C20A FS+21d, PGLS103391C40 FS+21d | 100% |  | 2011-07-11 | 2011-07-18 |  |  | CONCRETE [328 h]; CONCRETE [8.23 m3]; Cost |  | PA | C | GL |  | CT | 033 |  | B02 |  | 07 | R00 | ACF03 | PT | 033 |  | NEW |  |  |  |  | 23302.59 |  |
| PP2S103331C270 |  | PA-P2 ; Pour Strip at Zone S2-1B along Grid K | 6d | 2011-06-21 A | 2011-06-28 A | PP2S103351C60 FS+21d, PP1S103331C270 | 100% |  | 2011-06-21 | 2011-06-27 |  |  | CONCRETE [304 h]; CONCRETE [7.41 m3]; Cost |  | PA | C | P2 |  | CT | 033 |  | B02 |  | 07 | R00 | ACF03 | PT | 033 |  | NEW |  |  |  |  | 18665.69 |  |
| PP2S103331C250 |  | PA-P2 ; Pour Strip bet. Zones S2-1B & S2-2 | 5.88d | 2011-06-23 A | 2011-06-29 A | PP2S103351C60 FS+21d, PP2S203352C0 FS+21d, PP2S103331C270 | 100% |  | 2011-06-23 | 2011-06-30 |  |  | CONCRETE [240 h]; CONCRETE [6.03 m3]; Cost |  | PA | C | P2 |  | CT | 033 |  | B02 |  | 07 | R00 | ACF03 | PT | 033 |  | NEW |  |  |  |  | 14094.5 |  |
| PP1S103331C370 |  | PA-P1 ; Pour Strip at Zone S6-3A along Grid (AT-AU) | 6.88d | 2011-06-30 A | 2011-07-31 A | PP1S103371C100 FS+21d, PP2S103331C350 | 100% |  | 2011-06-30 | 2011-07-07 |  |  | CONCRETE [184 h]; CONCRETE [4.66 m3]; Cost |  | PA | C | P1 |  | CT | 033 |  | B02 |  | 07 | R00 | ACF03 | PT | 033 |  | NEW |  |  |  |  |  |  |
| PP2S103331C350 |  | PA-P2 ; Pour Strip at Zone S6-3A along Grid (AT-AU) | 6.88d | 2011-06-30 A | 2011-07-31 A | PP2S103351C100 FS+21d, PP2S103331C250 | 100% |  | 2011-06-30 | 2011-07-07 |  |  | CONCRETE [184 h]; CONCRETE [4.66 m3]; Cost |  | PA | C | P2 |  | CT | 033 |  | B02 |  | 07 | R00 | ACF03 | PT | 033 |  | NEW |  |  |  |  |  |  |
| PP2S103331C320 |  | PA-P2 ; Pour Strip bet. Zones S7-3A & S7-3B | 7d | 2011-07-03 A | 2011-07-20 A | PP2S103351C120 FS+21d, PP2S103351C130 FS+21d, PP1S103331C370 | 100% |  | 2011-11-05 | 2011-11-16 |  |  | CONCRETE [280 h]; CONCRETE [6.86 m3]; Cost |  | PA | C | P2 |  | CT | 033 |  | B02 |  | 07 | R00 | ACF03 | PT | 033 |  | NEW |  |  |  |  |  |  |
| PP1S103331C260 |  | PA-P1 ; Pour Strip bet. Zones S2-1B & S2-2 | 7d | 2011-07-06 A | 2011-07-27 A | PP1S103371C60 FS+21d, PP1S203372C0 FS+21d, PP2S103331C320 | 100% |  | 2011-08-24 | 2011-09-03 |  |  | CONCRETE [256 h]; CONCRETE [6.31 m3]; Cost |  | PA | C | P1 |  | CT | 033 |  | B02 |  | 07 | R00 | ACF03 | PT | 033 |  | NEW |  |  |  |  |  |  |
| PP1S103331C280 |  | PA-P1 ; Pour Strip at Zone S2-1B along Grid K | 7d | 2011-07-10 A | 2011-08-30 A | PP1S103371C60 FS+21d, PP1S103331C260 | 100% |  | 2011-08-06 | 2011-08-14 |  |  | CONCRETE [288 h]; CONCRETE [7.13 m3]; Cost |  | PA | C | P1 |  | CT | 033 |  | B02 |  | 07 | R00 | ACF03 | PT | 033 |  | NEW |  | 100 | 50 |  |  | 100 |
| PGLS103331C360 |  | PA-GR ; Pour Strip at Zone S6-3A along Grid (AT-AU) | 7d | 2011-08-10 A | 2011-08-30 A | PGLS103391C100 FS+21d | 100% |  | 2011-07-31 | 2011-08-07 |  |  | CONCRETE [168 h]; CONCRETE [4.11 m3]; Cost |  | PA | C | GL |  | CT | 033 |  | B02 |  | 07 | R00 | ACF03 | PT | 033 |  | NEW |  | 100 | 0 |  |  |  |
| PGLS103331C330 |  | PA-GR ; Pour Strip bet. Zones S7-3A & S7-3B | 7d | 2011-09-05 A | 2011-09-29 A | PGLS103391C120 FS+21d, PGLS103391C130 FS+21d | 100% |  | 2011-09-29 | 2011-10-08 |  |  | CONCRETE [208 h]; CONCRETE [5.07 m3]; Cost |  | PA | C | GL |  | CT | 033 |  | B02 |  | 07 | R00 | ACF03 | PT | 033 |  | NEW |  |  |  |  |  |  |
| PP1S103331C330 |  | PA-P1 ; Pour Strip bet. Zones S7-3A & S7-3B | 7d | 2011-10-01 | 2011-10-08 | PP1S103371C120 FS+21d, PP1S103371C130 FS+21d, PP2S103331C440 FF |  |  |  |  | 307.12d | 13d | CONCRETE [280 h]; CONCRETE [6.86 m3]; Cost |  | PA | C | P1 |  | CT | 033 |  | B02 |  | 07 | R00 | ACF03 | PT | 033 |  | NEW |  |  |  |  |  |  |
| PP2S103331C330 |  | PA-P2 ; Pour Strip bet. Zones S6-3B & S7-3A | 7d | 2011-10-01 | 2011-10-08 | PP2S103351C100 FS+21d, PP2S103351C120 FS+21d, PP1S103331C280 |  |  |  |  | 307.12d | 0d | CONCRETE [184 h]; CONCRETE [4.66 m3]; Cost |  | PA | C | P2 |  | CT | 033 |  | B02 |  | 07 | R00 | ACF03 | PT | 033 |  | NEW |  |  |  |  |  |  |
| PP2S103331C440 |  | PA-P2 ; Pour Strip bet. Zones S9-1 & S9-2 | 7d | 2011-10-01 | 2011-10-08 | PP2S903351C0 FS+21d, PP2S903352C0 FS+21d, PP2S103331C330 FF |  |  |  |  | 307.12d | 0d | CONCRETE [256 h]; CONCRETE [6.31 m3]; Cost |  | PA | C | P2 |  | CT | 033 |  | B02 |  | 07 | R00 | ACF03 | PT | 033 |  | NEW |  |  |  |  |  |  |
| PP2S103331C300 |  | PA-P2 ; Pour Strip bet. Zones S6-1 & S6-2 | 7d | 2011-10-24 | 2011-10-31 | PP2S603351C0 FS+21d, PP2S603352C0 FS+21d, PP1S103331C330 |  |  |  |  | 294.12d | 0d | CONCRETE [208 h]; CONCRETE [5.21 m3]; Cost |  | PA | C | P2 |  | CT | 033 |  | B02 |  | 07 | R00 | ACF03 | PT | 033 |  | NEW |  |  |  |  |  |  |
| PP2S103331C310 |  | PA-P2 ; Pour Strip bet. Zones S7-1 & S7-2 | 7d | 2011-10-24 | 2011-10-31 | PP2S703351C0 FS+21d, PP2S703352C0 FS+21d, PP2S103331C300 FF |  |  |  |  | 294.12d | 2.05d | CONCRETE [208 h]; CONCRETE [5.21 m3]; Cost |  | PA | C | P2 |  | CT | 033 |  | B02 |  | 07 | R00 | ACF03 | PT | 033 |  | NEW |  |  |  |  |  |  |
| PP2S103331C450 |  | PA-P2 ; Pour Strip bet. Zones S10-1 & S10-2 | 7d | 2011-10-26 | 2011-11-03 | PP2SX03351C0 FS+21d, PP2SX03352C0 FS+21d, PP2S103331C310 FF |  |  |  |  | 292.07d | 7.61d | CONCRETE [256 h]; CONCRETE [6.31 m3]; Cost |  | PA | C | P2 |  | CT | 033 |  | B02 |  | 07 | R00 | ACF03 | PT | 033 |  | NEW |  |  |  |  |  |  |
| PP1S103331C450 |  | PA-P1 ; Pour Strip bet. Zones S9-1 & S9-2 | 7d | 2011-10-30 | 2011-11-10 | PP1S903371C0 FS+21d, PP1S903372C0 FS+21d |  |  |  |  | 301.8d | 253.15d | CONCRETE [256 h]; CONCRETE [6.31 m3]; Cost |  | PA | C | P1 |  | CT | 033 |  | B02 |  | 07 | R00 | ACF03 | PT | 033 |  | NEW |  |  |  |  |  |  |
| PGLS103331C270 |  | PA-GR ; Pour Strip bet. Zones S2-1B & S2-2 | 6.88d | 2011-11-15 | 2011-11-23 | PGLS103391C60 FS+21d, PGLS203392C0 FS+21d |  |  |  |  | 272.47d | 194.12d | CONCRETE [304 h]; CONCRETE [7.41 m3]; Cost |  | PA | C | GL |  | CT | 033 |  | B02 |  | 07 | R00 | ACF03 | PT | 033 |  | NEW |  |  |  |  |  |  |
| PGLS103331C280 |  | PA-GR ; Pour Strip at Zone S2-1B along Grid K | 6.88d | 2011-11-15 | 2011-11-23 | PGLS103391C60 FS+21d, PP2S103331C450 |  |  |  |  | 284.47d | 3.72d | CONCRETE [280 h]; CONCRETE [6.86 m3]; Cost |  | PA | C | GL |  | CT | 033 |  | B02 |  | 07 | R00 | ACF03 | PT | 033 |  | NEW |  |  |  |  |  |  |
| PP2S103331C360 |  | PA-P2 ; Pour Strip bet. Zones S7-3B & S11-B | 7d | 2011-11-20 | 2011-11-29 | PP2S103351C130 FS+21d, PP2S103351C180 FS+21d, PGLS103331C280 FF |  |  |  |  | 280.75d | 0d | CONCRETE [264 h]; CONCRETE [6.58 m3]; Cost |  | PA | C | P2 |  | CT | 033 |  | B02 |  | 07 | R00 | ACF03 | PT | 033 |  | NEW |  |  |  |  |  |  |
| PP2S103331C370 |  | PA-P2 ; Pour Strip at Zone S11-B along Grid (AT-AU) | 7d | 2011-11-20 | 2011-11-29 | PP2S103351C180 FS+21d, PP2S103331C360 FF |  |  |  |  | 280.75d | 22.44d | CONCRETE [288 h]; CONCRETE [7.13 m3]; Cost |  | PA | C | P2 |  | CT | 033 |  | B02 |  | 07 | R00 | ACF03 | PT | 033 |  | NEW |  |  |  |  |  |  |
| PP2S103331C280 |  | PA-P2 ; Pour Strip bet. Zones S4-1 & S4-2 | 7d | 2011-11-24 | 2011-12-05 | PP2S403351C0 FS+21d, PP2S403352C0 FS+21d |  |  |  |  | 190.7d | 130.82d | CONCRETE [336 h]; CONCRETE [8.5 m3]; Cost |  | PA | C | P2 |  | CT | 033 |  | B02 |  | 07 | R00 | ACF03 | PT | 033 |  | NEW |  |  |  |  |  |  |
| PP1S103331C320 |  | PA-P1 ; Pour Strip bet. Zones S7-1 & S7-2 | 7d | 2011-11-29 | 2011-12-07 | PP1S703371C0 FS+21d, PP1S703372C0 FS+21d |  |  |  |  | 208d | 196.8d | CONCRETE [208 h]; CONCRETE [5.21 m3]; Cost |  | PA | C | P1 |  | CT | 033 |  | B02 |  | 07 | R00 | ACF03 | PT | 033 |  | NEW |  |  |  |  |  |  |
| PP1S103331C310 |  | PA-P1 ; Pour Strip bet. Zones S6-1 & S6-2 | 7d | 2011-12-05 | 2011-12-13 | PP1S603371C0 FS+21d, PP1S603372C0 FS+21d |  |  |  |  | 203.2d | 192d | CONCRETE [192 h]; CONCRETE [4.8 m3]; Cost |  | PA | C | P1 |  | CT | 033 |  | B02 |  | 07 | R00 | ACF03 | PT | 033 |  | NEW |  |  |  |  |  |  |
| PP1S103331C460 |  | PA-P1 ; Pour Strip bet. Zones S10-1 & S10-2 | 7d | 2011-12-07 | 2011-12-15 | PP1SX03371C0 FS+21d, PP1SX03372C0 FS+21d |  |  |  |  | 273.95d | 225.3d | CONCRETE [256 h]; CONCRETE [6.31 m3]; Cost |  | PA | C | P1 |  | CT | 033 |  | B02 |  | 07 | R00 | ACF03 | PT | 033 |  | NEW |  |  |  |  |  |  |
| PGLS103331C420 |  | PA-GR ; Pour Strip at Zone S8-C along Grid AU | 7d | 2011-12-20 | 2011-12-28 | PGLS103391C160 FS+21d |  |  |  |  | 271.69d | 213.32d | CONCRETE [256 h]; CONCRETE [6.31 m3]; Cost |  | PA | C | GL |  | CT | 033 |  | B02 |  | 07 | R00 | ACF03 | PT | 033 |  | NEW |  |  |  |  |  |  |
| PP2S103331C460 |  | PA-P2 ; Pour Strip bet. Zones S10-2 & S10-3 | 7d | 2011-12-26 | 2012-01-04 | PP2SX03352C0 FS+21d, PP2SX03353C0 FS+21d, PP2S103331C370 |  |  |  |  | 258.31d | 5.31d | CONCRETE [96 h]; CONCRETE [2.47 m3]; Cost |  | PA | C | P2 |  | CT | 033 |  | B02 |  | 07 | R00 | ACF03 | PT | 033 |  | NEW |  |  |  |  |  |  |
| PP1S103331C290 |  | PA-P1 ; Pour Strip bet. Zones S4-1 & S4-2 | 7d | 2011-12-29 | 2012-01-08 | PP1S403371C0 FS+21d, PP1S403372C0 FS+21d |  |  |  |  | 168.7d | 115.83d | CONCRETE [336 h]; CONCRETE [8.5 m3]; Cost |  | PA | C | P1 |  | CT | 033 |  | B02 |  | 07 | R00 | ACF03 | PT | 033 |  | NEW |  |  |  |  |  |  |
| PP1S103331C360 |  | PA-P1 ; Pour Strip bet. Zones S7-3B & S11-B | 6.88d | 2012-01-03 | 2012-01-10 | PP1S103371C130 FS+21d, PP1S103371C180 FS+21d, PP2S103331C460 FF |  |  |  |  | 253d | 0d | CONCRETE [256 h]; CONCRETE [6.31 m3]; Cost |  | PA | C | P1 |  | CT | 033 |  | B02 |  | 07 | R00 | ACF03 | PT | 033 |  | NEW |  |  |  |  |  |  |
| PP1S103331C380 |  | PA-P1 ; Pour Strip at Zone S11-B along Grid (AT-AU) | 6.88d | 2012-01-03 | 2012-01-10 | PP1S103371C180 FS+21d, PP1S103331C360 FF |  |  |  |  | 253d | 0d | CONCRETE [288 h]; CONCRETE [7.13 m3]; Cost |  | PA | C | P1 |  | CT | 033 |  | B02 |  | 07 | R00 | ACF03 | PT | 033 |  | NEW |  |  |  |  |  |  |
| PGLS103331C320 |  | PA-GR ; Pour Strip bet. Zones S7-1 & S7-2 | 7d | 2012-01-11 | 2012-01-18 | PGLS703391C0 FS+21d, PGLS703392C0 FS+21d, PP1S103331C380 |  |  |  |  | 253d | 0.8d | CONCRETE [304 h]; CONCRETE [7.41 m3]; Cost |  | PA | C | GL |  | CT | 033 |  | B02 |  | 07 | R00 | ACF03 | PT | 033 |  | NEW |  |  |  |  |  |  |
| PGLS103331C310 |  | PA-GR ; Pour Strip bet. Zones S6-1 & S6-2 | 7d | 2012-01-11 | 2012-01-19 | PGLS603391C0 FS+21d, PGLS603392C0 FS+21d, PGLS103331C320 FF |  |  |  |  | 252.2d | 0d | CONCRETE [112 h]; CONCRETE [2.61 m3]; Cost |  | PA | C | GL |  | CT | 033 |  | B02 |  | 07 | R00 | ACF03 | PT | 033 |  | NEW |  |  |  |  |  |  |
| PP2S103331C340 |  | PA-P2 ; Pour Strip bet. Zones S6-3A/S6-3B & S11-B | 7d | 2012-01-19 | 2012-01-28 | PP2S103351C100 FS+21d, PP2S103351C110 FS+21d, PP2S103351C180 FS+21d, PGLS103331C310 |  |  |  |  | 252.2d | 8.57d | CONCRETE [328 h]; CONCRETE [8.23 m3]; Cost |  | PA | C | P2 |  | CT | 033 |  | B02 |  | 07 | R00 | ACF03 | PT | 033 |  | NEW |  |  |  |  |  |  |
| PGLS103331C290 |  | PA-GR ; Pour Strip bet. Zones S4-1 & S4-2 | 6.88d | 2012-02-01 | 2012-02-11 | PGLS403391C0 FS+21d, PGLS403392C0 FS+21d |  |  |  |  | 116.42d | 74.95d | CONCRETE [328 h]; CONCRETE [8.23 m3]; Cost |  | PA | C | GL |  | CT | 033 |  | B02 |  | 07 | R00 | ACF03 | PT | 033 |  | NEW |  |  |  |  |  |  |
| PP1S103331C470 |  | PA-P1 ; Pour Strip bet. Zones S10-2 & S10-3 | 7d | 2012-02-07 | 2012-02-15 | PP1SX03372C0 FS+21d, PP1SX03373C0 FS+21d |  |  |  |  | 222.31d | 173.66d | CONCRETE [208 h]; CONCRETE [4.97 m3]; Cost |  | PA | C | P1 |  | CT | 033 |  | B02 |  | 07 | R00 | ACF03 | PT | 033 |  | NEW |  |  |  |  |  |  |
| PP1S103331C340 |  | PA-P1 ; Pour Strip bet. Zones S6-3A/S6-3B & S11-B | 7d | 2012-02-08 | 2012-02-16 | PP1S103371C100 FS+21d, PP1S103371C110 FS+21d, PP1S103371C180 FS+21d, PP2S103331C340 |  |  |  |  | 243.62d | 0d | CONCRETE [288 h]; CONCRETE [7.13 m3]; Cost |  | PA | C | P1 |  | CT | 033 |  | B02 |  | 07 | R00 | ACF03 | PT | 033 |  | NEW |  |  |  |  |  |  |
| PP1S103331C350 |  | PA-P1 ; Pour Strip bet. Zones S6-3B & S7-3A | 7d | 2012-02-08 | 2012-02-16 | PP1S103371C110 FS+21d, PP1S103371C120 FS+21d, PP1S103331C340 FF |  |  |  |  | 243.62d | 0d | CONCRETE [184 h]; CONCRETE [4.66 m3]; Cost |  | PA | C | P1 |  | CT | 033 |  | B02 |  | 07 | R00 | ACF03 | PT | 033 |  | NEW |  |  |  |  |  |  |
| PP2S103331C420 |  | PA-P2 ; Pour Strip at Zone S11-A along Grid AU | 7d | 2012-02-08 | 2012-02-16 | PP2S103351C170 FS+21d, PP2S103352R02 FS+21d, PP1S103331C350 FF |  |  |  |  | 243.62d | 31.77d | CONCRETE [280 h]; CONCRETE [6.86 m3]; Cost |  | PA | C | P2 |  | CT | 033 |  | B02 |  | 07 | R00 | ACF03 | PT | 033 |  | NEW |  |  |  |  |  |  |
| PGLS103331C350 |  | PA-GR ; Pour Strip bet. Zones S6-3A & S11-B | 6.88d | 2012-02-14 | 2012-02-21 | PGLS103391C100 FS+21d, PGLS103391C180 FS+21d |  |  |  |  | 158d | 101.38d | CONCRETE [192 h]; CONCRETE [4.94 m3]; Cost |  | PA | C | GL |  | CT | 033 |  | B02 |  | 07 | R00 | ACF03 | PT | 033 |  | NEW |  |  |  |  |  |  |
| PGLS103331C370 |  | PA-GR ; Pour Strip at Zone S11-B along Grid (AT-AU) | 6.88d | 2012-02-14 | 2012-02-21 | PGLS103391C180 FS+21d |  |  |  |  | 158d | 101.38d | CONCRETE [232 h]; CONCRETE [5.76 m3]; Cost |  | PA | C | GL |  | CT | 033 |  | B02 |  | 07 | R00 | ACF03 | PT | 033 |  | NEW |  |  |  |  |  |  |
| PGLS103331C340 |  | PA-GR ; Pour Strip bet. Zones S6-3B & S11-D | 7d | 2012-02-25 | 2012-03-04 | PGLS103391C110 FS+21d, PGLS103391C200 FS+21d |  |  |  |  | 148.62d | 92d | CONCRETE [168 h]; CONCRETE [4.11 m3]; Cost |  | PA | C | GL |  | CT | 033 |  | B02 |  | 07 | R00 | ACF03 | PT | 033 |  | NEW |  |  |  |  |  |  |

| ID | WBS | Activity | Duration | Start | Finish | Predecessors | Complete | Planned start | Planned finish | Total float | Free float | Resources | RENZ CODE | CCAD BUILDING(SET) | CCAD PHASE(SET) | CCAD FLOOR(SET) | CCAD WORK(SET) | CCAD SECTION(SET) | CCAD BILL(SET) | CCAD TAG(SET) | CCAD REV(SET) | CCADACF (SET) | CCAD CSA | CCAD SSCF | change id | IDDD | ACCESS DATES | RENZ % COMPLETE | CCAD ZONE(SET) | CCAD SERIAL No.(SET) | CCAD RESPONSIBILITY(SET) | CCAD Carpark code(SET) | CCAD Carpark district code(set) | CCAD CBS(SET) | CCAD HANDOVER(SET) | Claimed This Month |
| --- | --- | --- | --- | --- | --- | --- | --- | --- | --- | --- | --- | --- | --- | --- | --- | --- | --- | --- | --- | --- | --- | --- | --- | --- | --- | --- | --- | --- | --- | --- | --- | --- | --- | --- | --- | --- |
| PP1S103331C440 |  | PA-P1 ; Pour Strip at Zone S11-A along Grid AU | 7d | 2012-03-25 | 2012-04-02 | PP1S103371C170 FS+21d, PP1S103372R02 FS+21d, PP2S103331C420 |  |  |  | 211.85d | 18.87d | CONCRETE [376 h]; CONCRETE [9.33 m3]; Cost | NEW | PA | C | P1 | CT | 033 | B02 | 07 | R00 | ACF03 | PT | 033 |  |  |  |  |  |  |  |  |  |  |  |  |
| PP2S103331C380 |  | PA-P2 ; Pour Strip bet. Zones S7-4 & S11-A/S11-C | 7d | 2012-04-16 | 2012-04-24 | PP2S103351C190 FS+21d, PP2S703354R02 FS+21d, PP2S703354C0 FS+21d, PP2S103351C170 FS+21d, PP2S103352R02 FS+21d, PP1S103331C440 FF |  |  |  | 192.98d | 0d | CONCRETE [360 h]; CONCRETE [9.05 m3]; Cost | NEW | PA | C | P2 | CT | 033 | B02 | 07 | R00 | ACF03 | PT | 033 |  |  |  |  |  |  |  |  |  |  |  |  |
| PP2S103331C400 |  | PA-P2 ; Pour Strip at Zone S11-C along Grid AU | 7d | 2012-04-16 | 2012-04-24 | PP2S103351C190 FS+21d, PP2S103331C380 FF |  |  |  | 192.98d | 0d | CONCRETE [136 h]; CONCRETE [3.29 m3]; Cost | NEW | PA | C | P2 | CT | 033 | B02 | 07 | R00 | ACF03 | PT | 033 |  |  |  |  |  |  |  |  |  |  |  |  |
| PP2S103331C410 |  | PA-P2 ; Pour Strip bet. Zones S11-A & S11-C | 7d | 2012-04-16 | 2012-04-24 | PP2S103351C190 FS+21d, PP2S103351C170 FS+21d, PP2S103352R02 FS+21d, PP2S103331C400 FF |  |  |  | 192.98d | 14.78d | CONCRETE [288 h]; CONCRETE [7.13 m3]; Cost | NEW | PA | C | P2 | CT | 033 | B02 | 07 | R00 | ACF03 | PT | 033 |  |  |  |  |  |  |  |  |  |  |  |  |
| PP2S103331C290 |  | PA-P2 ; Pour Strip bet. Zones S5-1 & S5-2 | 7d | 2012-05-02 | 2012-05-10 | PP2S503351C0 FS+21d, PP2S503352C0 FS+21d, PP2S103331C410 FF |  |  |  | 178.2d | 20.22d | CONCRETE [336 h]; CONCRETE [8.5 m3]; Cost | NEW | PA | C | P2 | CT | 033 | B02 | 07 | R00 | ACF03 | PT | 033 |  |  |  |  |  |  |  |  |  |  |  |  |
| PP1S103331C390 |  | PA-P1 ; Pour Strip bet. Zones S7-4 & S11-A/S11-C | 7d | 2012-05-27 | 2012-06-04 | PP1S103371C190 FS+21d, PP1S703374R02 FS+21d, PP1S703374C0 FS+21d, PP1S103371C170 FS+21d, PP1S103372R02 FS+21d, PP2S103331C290 FF |  |  |  | 157.98d | 0d | CONCRETE [352 h]; CONCRETE [8.78 m3]; Cost | NEW | PA | C | P1 | CT | 033 | B02 | 07 | R00 | ACF03 | PT | 033 |  |  |  |  |  |  |  |  |  |  |  |  |
| PP1S103331C400 |  | PA-P1 ; Pour Strip at Zone S11-C along Grid AU | 7d | 2012-05-27 | 2012-06-04 | PP1S103371C190 FS+21d, PP1S103331C390 FF |  |  |  | 157.98d | 0d | CONCRETE [16 h]; CONCRETE [0.27 m3]; Cost | NEW | PA | C | P1 | CT | 033 | B02 | 07 | R00 | ACF03 | PT | 033 |  |  |  |  |  |  |  |  |  |  |  |  |
| PP1S103331C410 |  | PA-P1 ; Pour Strip bet. Zones S11-A & S11-C | 7d | 2012-05-27 | 2012-06-04 | PP1S103371C190 FS+21d, PP1S103371C170 FS+21d, PP1S103372R02 FS+21d, PP1S103331C400 FF |  |  |  | 157.98d | 10.78d | CONCRETE [280 h]; CONCRETE [6.86 m3]; Cost | NEW | PA | C | P1 | CT | 033 | B02 | 07 | R00 | ACF03 | PT | 033 |  |  |  |  |  |  |  |  |  |  |  |  |
| PP1S103331C300 |  | PA-P1 ; Pour Strip bet. Zones S5-1 & S5-2 | 7d | 2012-06-07 | 2012-06-17 | PP1S503371C0 FS+21d, PP1S503372C0 FS+21d, PP1S103331C410 FF |  |  |  | 147.2d | 3.59d | CONCRETE [336 h]; CONCRETE [8.5 m3]; Cost | NEW | PA | C | P1 | CT | 033 | B02 | 07 | R00 | ACF03 | PT | 033 |  |  |  |  |  |  |  |  |  |  |  |  |
| PP2S103331C390 |  | PA-P2 ; Pour Strip bet. Zones S7-4 & S8-A | 5.25d | 2012-06-14 | 2012-06-21 | PP2S103351C140 FS+21d, PP2S703354R02 FS+21d, PP2S703354C0 FS+21d, PP1S103331C300 FF |  |  |  | 143.61d | 0d | CONCRETE [216 h]; CONCRETE [5.49 m3]; Cost | NEW | PA | C | P2 | CT | 033 | B02 | 07 | R00 | ACF03 | PT | 033 |  |  |  |  |  |  |  |  |  |  |  |  |
| PP2S103331C430 |  | PA-P2 ; Pour Strip bet. Zones S8-A & S11-A | 5.25d | 2012-06-14 | 2012-06-21 | PP2S103351C140 FS+21d, PP2S103351C170 FS+21d, PP2S103352R02 FS+21d, PP2S103331C390 FF |  |  |  | 143.61d | 22.12d | CONCRETE [280 h]; CONCRETE [6.86 m3]; Cost | NEW | PA | C | P2 | CT | 033 | B02 | 07 | R00 | ACF03 | PT | 033 |  |  |  |  |  |  |  |  |  |  |  |  |
| PGLS103331C410 |  | PA-GR ; Pour Strip at Zone S11-A along Grid AU | 5.75d | 2012-07-08 | 2012-07-14 | PGLS103391C170 FS+21d, PGLS103394R02 FS+21d, PGLS103352R02 |  |  |  | 104.36d | 46d | CONCRETE [456 h]; CONCRETE [11.52 m3]; Cost | NEW | PA | C | GL | CT | 033 | B02 | 07 | R00 | ACF03 | PT | 033 |  |  |  |  |  |  |  |  |  |  |  |  |
| PP1S103331C420 |  | PA-P1 ; Pour Strip bet. Zones S7-4 & S8-A | 7d | 2012-07-09 | 2012-07-17 | PP1S103371C140 FS+21d, PP1S703374R02 FS+21d, PP1S703374C0 FS+21d, PP2S103331C430 FF |  |  |  | 121.49d | 0d | CONCRETE [216 h]; CONCRETE [5.49 m3]; Cost | NEW | PA | C | P1 | CT | 033 | B02 | 07 | R00 | ACF03 | PT | 033 |  |  |  |  |  |  |  |  |  |  |  |  |
| PP1S103331C430 |  | PA-P1 ; Pour Strip bet. Zones S8-A & S11-A | 7d | 2012-07-09 | 2012-07-17 | PP1S103371C140 FS+21d, PP1S103371C170 FS+21d, PP1S103372R02 FS+21d, PP1S103331C420 FF |  |  |  | 121.49d | 51.25d | CONCRETE [328 h]; CONCRETE [8.23 m3]; Cost | NEW | PA | C | P1 | CT | 033 | B02 | 07 | R00 | ACF03 | PT | 033 |  |  |  |  |  |  |  |  |  |  |  |  |
| PGLS103331C300 |  | PA-GR ; Pour Strip bet. Zones S5-1 & S5-2 | 7d | 2012-07-15 | 2012-07-23 | PGLS503391C0 FS+21d, PGLS503392C0 FS+21d |  |  |  | 20.2d | 0d | CONCRETE [328 h]; CONCRETE [8.23 m3]; Cost | NEW | PA | C | GL | CT | 033 | B02 | 07 | R00 | ACF03 | PT | 033 |  |  |  |  |  |  |  |  |  |  |  |  |
| PGLS103331C390 |  | PA-GR ; Pour Strip bet. Zones S7-4 & S8-A | 7d | 2012-07-30 | 2012-08-07 | PGLS103391C140 FS+21d, PGLS703394R02 FS+21d, PGLS703394C0 FS+21d |  |  |  | 83.61d | 25.25d | CONCRETE [184 h]; CONCRETE [4.66 m3]; Cost | NEW | PA | C | GL | CT | 033 | B02 | 07 | R00 | ACF03 | PT | 033 |  |  |  |  |  |  |  |  |  |  |  |  |
| PGLS103331C380 |  | PA-GR ; Pour Strip bet. Zones S7-4 & S11-C | 5.5d | 2012-08-01 | 2012-08-07 | PGLS103391C190 FS+21d, PGLS703394R02 FS+21d, PGLS703394C0 FS+21d |  |  |  | 83.61d | 25.25d | CONCRETE [120 h]; CONCRETE [3.02 m3]; Cost | NEW | PA | C | GL | CT | 033 | B02 | 07 | R00 | ACF03 | PT | 033 |  |  |  |  |  |  |  |  |  |  |  |  |
| PGLS103331C400 |  | PA-GR ; Pour Strip bet. Zones S8-B & S11-C | 5.5d | 2012-08-01 | 2012-08-07 | PGLS103391C190 FS+21d, PGLS103391C260 FS+21d, PGLS103392R02 FS+21d, PP2CO03301R02 FF |  |  |  | 83.61d | 25.25d | CONCRETE [72 h]; CONCRETE [1.92 m3]; Cost | NEW | PA | C | GL | CT | 033 | B02 | 07 | R00 | ACF03 | PT | 033 |  |  |  |  |  |  |  |  |  |  |  |  |
|  | 11 | **CAR PARK ZONE S1-1** |  |  |  |  |  |  |  |  |  |  |  |  |  |  |  |  |  |  |  |  |  |  |  |  |  |  |  |  |  |  |  |  |  |  |
|  | 1 | **CAR PARK ZONE S1-1A** |  | 2010-06-22 | 2011-06-30 |  |  |  |  |  |  |  |  |  |  |  |  |  |  |  |  |  |  |  |  |  |  |  |  |  |  |  |  |  |  |  |
| PFNS103301C10 |  | PA-FN ; Pile Cap & Grade Beam (Zone 1-1A) | 12d | 2010-06-22 A | 2011-02-03 A | MGNMI00101M0 FS+100d | 100% | 2011-03-02 | 2011-03-15 |  |  | ANTI-TERMITE [1648 h]; CONCRETE [16096 h]; CONCRETE [404.93 m3]; ANTI-TERMITE [1126.37 m2]; THERMAL & MOISTURE [524.42 m2]; THERMAL & MOISTURE [400 h]; Cost | NEW | PA | C | FN | CT | 033 | B02 | 02 | R00 | ACF02 |  | 033 | PFNS103301C0 | PFNXA03301C0 | ACCESS | 100 | S1 | 01 | SIS | 1A | S | BILL 2 | S2 |  |
| PFNS103321C10 |  | PA-FN ; Back filling & Drainage (Zone 1-1A) | 7d | 2010-08-01 A | 2011-01-29 A | PFNS103301C10 | 100% | 2011-04-17 | 2011-04-24 |  |  | EXCAVATION & BACKFILLING [295 m3]; EXCAVATION & BACKFILLING [448 h]; Cost | NEW | PA | C | FN | CT | 033 | B02 | 04 | R00 | ACF02 |  | 033 | PFNS103321C0 | PFNXA03321C0 | ACCESS | 100 | S1 | 21 | SIS | 1A | S | BILL 2 | S2 |  |
| PP3S103341C10 |  | PA-P3 ; RC work - Wall & Column (Zone 1-1A) | 7d | 2010-10-10 A | 2011-01-02 A | PP3S103331C10 | 100% | 2011-03-08 | 2011-03-15 |  |  | CONCRETE [12256 h]; CONCRETE [308.24 m3]; Cost | NEW | PA | C | P3 | CT | 033 | B02 | 05 | R00 | ACF03 |  | 033 | PP3S103341C0 | PP3XA03341C0 |  | 100 | S1 | 41 | SIS | 1A | S | BILL 2 | S2 |  |
| PP3S103331C10 |  | PA-P3 ; SOG Concrete (Zone 1-1A) | 7d | 2010-10-28 A | 2011-03-24 A | PFNS103321C10 | 100% | 2011-02-28 | 2011-03-07 |  |  | ANTI-TERMITE [504 h]; CONCRETE [4920 h]; CONCRETE [123.83 m3]; ANTI-TERMITE [344.45 m2]; THERMAL & MOISTURE [160.37 m2]; THERMAL & MOISTURE [120 h]; Cost | NEW | PA | C | P3 | CT | 033 | B02 | 06 | R00 | ACF02 |  | 033 | PP3S103331C0 | PP3XA03331C0 | ACCESS | 100 | S1 | 31 | SIS | 1A | S | BILL 2 | S2 |  |
| PP2S103351C10 |  | PA-P2 ; RC work - Slab (Zone 1-1A) | 10d | 2011-05-04 A | 2011-06-07 A | PGLS103391C20A FS+10d, PP2S103351C20, PP3S103341C10 | 100% | 2011-07-12 | 2011-07-24 |  |  | CONCRETE [4920 h]; CONCRETE [123.83 m3]; Cost | NEW | PA | C | P2 | CT | 033 | B02 | 07 | R00 | ACF03 | PT | 033 | PP2S103351C0 | PP2XA03351C0 |  | 90 | S1 | 51 | SIS | 1A | S | BILL 2 | S2 | 70043.67 |
| PP2S103361C10 |  | PA-P2 ; RC work - Wall & Column (Zone 1-1A) | 7d | 2011-05-10 A | 2011-06-08 A | PP2S103351C10 | 100% | 2011-07-24 | 2011-08-01 |  |  | CONCRETE [12256 h]; CONCRETE [308.24 m3]; Cost | NEW | PA | C | P2 | CT | 033 | B02 | 05 | R00 | ACF03 |  | 033 | PP2S103361C0 | PP2XA03361C0 |  | 32 | S1 | 61 | SIS | 1A | S | BILL 2 | S2 | 86550.61 |
| PP1S103371C10 |  | PA-P1 ; RC work - Slab (Zone 1-1A) | 6d | 2011-06-11 A | 2011-06-16 A | PP1S103371C20, PP2S103361C10 | 100% | 2011-06-22 | 2011-06-30 |  |  | CONCRETE [4920 h]; CONCRETE [123.83 m3]; Cost | NEW | PA | C | P1 | CT | 033 | B02 | 07 | R00 | ACF03 | PT | 033 | PP1S103371C0 | PP1XA03371C0 |  |  | S1 | 71 | SIS | 1A | S | BILL 2 | S2 | 135210.1 |
| PP1S103381C10 |  | PA-P1 ; RC work - Wall & Column (Zone 1-1A) | 7.04d | 2011-06-13 A | 2011-06-18 A | PP1S103371C10, PP3S103331C200 | 100% | 2011-06-30 | 2011-07-09 |  |  | CONCRETE [12256 h]; CONCRETE [308.24 m3]; Cost | NEW | PA | C | P1 | CT | 033 | B02 | 05 | R00 | ACF03 |  | 033 | PP1S103381C0 | PP1XA03381C0 |  |  | S1 | 81 | SIS | 1A | S | BILL 2 | S2 | 24429.91 |
| PGLS103391C10 |  | PA-GR ; RC work - Slab (Zone 1-1A) | 10d | 2011-06-14 A | 2011-06-30 A | PGLS103391C20A, PP1S103381C10 | 100% | 2011-07-09 | 2011-07-20 |  |  | CONCRETE [4920 h]; CONCRETE [123.83 m3]; Cost | NEW | PA | C | GL | CT | 033 | B02 | 07 | R00 | ACF03 | PT | 033 | PGLS103391C0 | PGLXA03391C0 |  |  | S1 | 91 | SIS | 1A | S | BILL 2 | S2 | 150471.86 |

| ID | WBS | Activity | Duration | Start | Finish | Predecessors | Complete | Planned start | Planned finish | Resources | change id | IDDD | RENZ CODE | ACCESS DATES | RENZ % COMPLETE | CCAD BUILDING(SET) | CCAD PHASE(SET) | CCAD FLOOR(SET) | CCAD ZONE(SET) | CCAD WORK(SET) | CCAD SECTION(SET) | CCAD SERIAL No.(SET) | CCAD RESPONSIBILITY(SET) | CCAD Carpark code(SET) | CCAD Carpark district code(set) | CCAD CBS(SET) | CCAD BILL(SET) | CCAD HANDOVER(SET) | CCAD TAG(SET) | CCAD REV(SET) | CCADACF (SET) | CCAD SSCF | CCAD CSA | Claimed This Month |
| --- | --- | --- | --- | --- | --- | --- | --- | --- | --- | --- | --- | --- | --- | --- | --- | --- | --- | --- | --- | --- | --- | --- | --- | --- | --- | --- | --- | --- | --- | --- | --- | --- | --- | --- |
|  | 2 | **CAR PARK ZONE S1-1B** |  | 2010-06-10 | 2011-06-04 |  |  |  |  |  |  |  |  |  |  |  |  |  |  |  |  |  |  |  |  |  |  |  |  |  |  |  |  |  |
| PFNS103311C20 |  | PA-FN ; Duct Bank & MEP Trench (Zone 1-1B) | 19.88d | 2010-06-10 A | 2011-01-26 A | PFNS103301C20 FF+14d | 100% | 2011-03-23 | 2011-04-14 | CONCRETE [32008 h]; CONCRETE [805.07 m3]; Cost | PFNS103311C0 | PFNXA03311C0 | NEW | ACCESS | 100 | PA | C | FN | S1 | CT | 033 | 11 | SIS | 1B | S | BILL 2 | B02 | S2 | 09 | R00 | ACF02 | 033 |  |  |
| PFNS103301C20 |  | PA-FN ; Pile Cap & Grade Beam (Zone 1-1B) | 25d | 2010-06-22 A | 2011-02-03 A | MGNMI00101M0 FS+100d | 100% | 2011-03-01 | 2011-03-29 | ANTI-TERMITE [792 h]; CONCRETE [7752 h]; CONCRETE [195 m3]; ANTI-TERMITE [542.42 m2]; THERMAL & MOISTURE [252.54 m2]; THERMAL & MOISTURE [192 h]; Cost | PFNS103301C0 | PFNXA03301C0 | NEW | ACCESS | 100 | PA | C | FN | S1 | CT | 033 | 01 | SIS | 1B | S | BILL 2 | B02 | S2 | 02 | R00 | ACF02 | 033 |  |  |
| PFNS103321C20 |  | PA-FN ; Back filling & Drainage (Zone 1-1B) | 14d | 2010-08-01 A | 2011-01-29 A | PFNS103301C20, PFNS103311C20 | 100% | 2011-04-16 | 2011-05-01 | EXCAVATION & BACKFILLING [599 m3]; EXCAVATION & BACKFILLING [904 h]; Cost | PFNS103321C0 | PFNXA03321C0 | NEW | ACCESS | 100 | PA | C | FN | S1 | CT | 033 | 21 | SIS | 1B | S | BILL 2 | B02 | S2 | 04 | R00 | ACF02 | 033 |  |  |
| PP3S103341C20 |  | PA-P3 ; RC work - Wall & Column (Zone 1-1B) | 19.88d | 2010-10-10 A | 2011-01-02 A | PP3S103331C20 | 100% | 2011-05-18 | 2011-06-09 | CONCRETE [24360 h]; CONCRETE [612.76 m3]; Cost | PP3S103341C0 | PP3XA03341C0 | NEW | ACCESS | 100 | PA | C | P3 | S1 | CT | 033 | 41 | SIS | 1B | S | BILL 2 | B02 | S2 | 05 | R00 | ACF03 | 033 |  |  |
| PP3S103331C20 |  | PA-P3 ; SOG Concrete (Zone 1-1B) | 14d | 2010-10-28 A | 2011-03-24 A | PFNS103321C20 | 100% | 2011-05-02 | 2011-05-17 | ANTI-TERMITE [1008 h]; CONCRETE [9792 h]; CONCRETE [246.17 m3]; ANTI-TERMITE [684.76 m2]; THERMAL & MOISTURE [318.81 m2]; THERMAL & MOISTURE [240 h]; Cost | PP3S103331C0 | PP3XA03331C0 | NEW | ACCESS | 100 | PA | C | P3 | S1 | CT | 033 | 31 | SIS | 1B | S | BILL 2 | B02 | S2 | 06 | R00 | ACF02 | 033 |  |  |
| PP2S103351C20 |  | PA-P2 ; RC work - Slab (Zone 1-1B) | 19d | 2010-12-20 A | 2011-05-02 A | PP3S103341C20 | 100% | 2011-06-11 | 2011-07-03 | CONCRETE [9792 h]; CONCRETE [246.17 m3]; Cost | PP2S103351C0 | PP2XA03351C0 | NEW |  | 100 | PA | C | P2 | S1 | CT | 033 | 51 | SIS | 1B | S | BILL 2 | B02 | S2 | 07 | R00 | ACF03 | 033 | PT |  |
| PP2S103361C20 |  | PA-P2 ; RC work - Wall & Column (Zone 1-1B) | 24d | 2011-01-08 A | 2011-05-05 A | PP2S103351C20 | 100% | 2011-07-05 | 2011-08-01 | CONCRETE [24360 h]; CONCRETE [612.76 m3]; Cost | PP2S103361C0 | PP2XA03361C0 | NEW |  | 100 | PA | C | P2 | S1 | CT | 033 | 61 | SIS | 1B | S | BILL 2 | B02 | S2 | 05 | R00 | ACF03 | 033 |  |  |
| PP1S103371C20 |  | PA-P1 ; RC work - Slab (Zone 1-1B) | 18d | 2011-02-01 A | 2011-05-12 A | PP2S103361C20 | 100% | 2011-08-02 | 2011-08-22 | CONCRETE [9792 h]; CONCRETE [246.17 m3]; Cost | PP1S103371C0 | PP1XA03371C0 | NEW |  | 100 | PA | C | P1 | S1 | CT | 033 | 71 | SIS | 1B | S | BILL 2 | B02 | S2 | 07 | R00 | ACF03 | 033 | PT |  |
| PP1S103381C20 |  | PA-P1 ; RC work - Wall & Column (Zone 1-1B) | 18d | 2011-02-10 A | 2011-06-01 A | PP1S103371C20, PP3S103331C200 | 100% | 2011-08-23 | 2011-09-14 | CONCRETE [24360 h]; CONCRETE [612.76 m3]; Cost | PP1S103381C0 | PP1XA03381C0 | NEW |  | 90 | PA | C | P1 | S1 | CT | 033 | 81 | SIS | 1B | S | BILL 2 | B02 | S2 | 05 | R00 | ACF03 | 033 |  | 25963.88 |
| PGLS103391C20A |  | PA-GR ; RC work - Slab (Zone 1-1B) | 20.88d | 2011-03-06 A | 2011-06-04 A | PP1S103381C20 | 100% | 2011-03-22 | 2011-04-14 | CONCRETE [9792 h]; CONCRETE [246.17 m3]; Cost | PGLS103391C0 | PGLXA03391C0 | NEW |  | 90 | PA | C | GL | S1 | CT | 033 | 91 | SIS | 1B | S | BILL 2 | B02 | S2 | 07 | R00 | ACF03 | 033 | PT | 161978.53 |
|  | 12 | **CAR PARK ZONE S1-2** |  |  |  |  |  |  |  |  |  |  |  |  |  |  |  |  |  |  |  |  |  |  |  |  |  |  |  |  |  |  |  |  |
|  | 3 | **CAR PARK ZONE S1-2A** |  | 2010-06-14 | 2011-06-29 |  |  |  |  |  |  |  |  |  |  |  |  |  |  |  |  |  |  |  |  |  |  |  |  |  |  |  |  |  |
| PFNS103301C30 |  | PA-FN ; Pile Cap & Grade Beam (Zone 1-2A) | 12d | 2010-06-14 A | 2010-12-12 A | MGNMI00101M0 FS+150d | 100% | 2011-03-02 | 2011-03-15 | ANTI-TERMITE [472 h]; CONCRETE [4608 h]; CONCRETE [115.76 m3]; ANTI-TERMITE [322 m2]; THERMAL & MOISTURE [149.92 m2]; THERMAL & MOISTURE [112 h]; Cost | PFNS103301C0 | PFNXA03301C0 | NEW | ACCESS | 100 | PA | C | FN | S1 | CT | 033 | 01 | SIS | 2A | S | BILL 2 | B02 | S2 | 02 | R00 | ACF02 | 033 |  |  |
| PFNS103321C30 |  | PA-FN ; Back filling & Drainage (Zone 1-2A) | 7d | 2010-10-15 A | 2011-01-06 A | PFNS103301C30 | 100% | 2011-03-16 | 2011-03-23 | EXCAVATION & BACKFILLING [125 m3]; EXCAVATION & BACKFILLING [192 h]; Cost | PFNS103321C0 | PFNXA03321C0 | NEW | ACCESS | 100 | PA | C | FN | S1 | CT | 033 | 21 | SIS | 2A | S | BILL 2 | B02 | S2 | 04 | R00 | ACF02 | 033 |  |  |
| PP3S103341C30 |  | PA-P3 ; RC work - Wall & Column (Zone 1-2A) | 13d | 2010-11-01 A | 2011-01-02 A | PP3S103331C30 | 100% | 2011-02-28 | 2011-03-14 | CONCRETE [3520 h]; CONCRETE [88.36 m3]; Cost | PP3S103341C0 | PP3XA03341C0 | NEW | ACCESS | 100 | PA | C | P3 | S1 | CT | 033 | 41 | SIS | 2A | S | BILL 2 | B02 | S2 | 05 | R00 | ACF03 | 033 |  |  |
| PP3S103331C30 |  | PA-P3 ; SOG Concrete (Zone 1-2A) | 6.88d | 2010-11-30 A | 2011-02-28 A | PFNS103321C30 | 100% | 2011-03-24 | 2011-03-31 | ANTI-TERMITE [144 h]; CONCRETE [1432 h]; CONCRETE [35.95 m3]; ANTI-TERMITE [100 m2]; THERMAL & MOISTURE [46.56 m2]; THERMAL & MOISTURE [40 h]; Cost | PP3S103331C0 | PP3XA03331C0 | NEW | ACCESS | 100 | PA | C | P3 | S1 | CT | 033 | 31 | SIS | 2A | S | BILL 2 | B02 | S2 | 06 | R00 | ACF02 | 033 |  |  |
| PP2S103351C30 |  | PA-P2 ; RC work - Slab (Zone 1-2A) | 7d | 2011-01-22 A | 2011-05-03 A | PGLS103391C40 FS+10d, PP2S103351C40, PP3S103341C30 | 100% | 2011-04-21 | 2011-04-30 | CONCRETE [1432 h]; CONCRETE [35.95 m3]; Cost | PP2S103351C0 | PP2XA03351C0 | NEW |  | 100 | PA | C | P2 | S1 | CT | 033 | 51 | SIS | 2A | S | BILL 2 | B02 | S2 | 07 | R00 | ACF03 | 033 | PT |  |
| PP2S103361C30 |  | PA-P2 ; RC work - Wall & Column (Zone 1-2A) | 7d | 2011-01-27 A | 2011-05-09 A | PP2S103351C30 | 100% | 2011-04-30 | 2011-05-08 | CONCRETE [3520 h]; CONCRETE [88.36 m3]; Cost | PP2S103361C0 | PP2XA03361C0 | NEW |  | 100 | PA | C | P2 | S1 | CT | 033 | 61 | SIS | 2A | S | BILL 2 | B02 | S2 | 05 | R00 | ACF03 | 033 |  |  |
| PP1S103371C30 |  | PA-P1 ; RC work - Slab (Zone 1-2A) | 7d | 2011-05-08 A | 2011-05-19 A | PP1S103371C40, PP2S103361C30 | 100% | 2011-07-04 | 2011-07-12 | CONCRETE [1432 h]; CONCRETE [35.95 m3]; Cost | PP1S103371C0 | PP1XA03371C0 | NEW |  | 100 | PA | C | P1 | S1 | CT | 033 | 71 | SIS | 2A | S | BILL 2 | B02 | S2 | 07 | R00 | ACF03 | 033 | PT |  |
| PP1S103381C30 |  | PA-P1 ; RC work - Wall & Column (Zone 1-2A) | 7d | 2011-05-15 A | 2011-06-19 A | PP1S103371C30 | 100% | 2011-07-12 | 2011-07-20 | CONCRETE [3520 h]; CONCRETE [88.36 m3]; Cost | PP1S103381C0 | PP1XA03381C0 | NEW |  | 30 | PA | C | P1 | S1 | CT | 033 | 81 | SIS | 2A | S | BILL 2 | B02 | S2 | 05 | R00 | ACF03 | 033 |  | 21066.24 |
| PGLS103391C30 |  | PA-GR ; RC work - Slab (Zone 1-2A) | 14d | 2011-06-16 A | 2011-06-29 A | PGLS103391C40, PP1S103381C30 | 100% | 2011-06-20 | 2011-07-06 | CONCRETE [1432 h]; CONCRETE [35.95 m3]; Cost | PGLS103391C0 | PGLXA03391C0 | NEW |  |  | PA | C | GL | S1 | CT | 033 | 91 | SIS | 2A | S | BILL 2 | B02 | S2 | 07 | R00 | ACF03 | 033 | PT | 186441.98 |
|  | 4 | **CAR PARK ZONE S1-2B** |  | 2010-06-14 | 2011-06-04 |  |  |  |  |  |  |  |  |  |  |  |  |  |  |  |  |  |  |  |  |  |  |  |  |  |  |  |  |  |
| PFNS103301C40 |  | PA-FN ; Pile Cap & Grade Beam (Zone 1-2B) | 25d | 2010-06-14 A | 2010-12-12 A | MGNMI00101M0 FS+100d | 100% | 2011-03-01 | 2011-03-29 | ANTI-TERMITE [2800 h]; CONCRETE [27280 h]; CONCRETE [686.24 m3]; ANTI-TERMITE [1908.87 m2]; THERMAL & MOISTURE [888.74 m2]; THERMAL & MOISTURE [672 h]; Cost | PFNS103301C0 | PFNXA03301C0 | NEW | ACCESS | 100 | PA | C | FN | S1 | CT | 033 | 01 | SIS | 2B | S | BILL 2 | B02 | S2 | 02 | R00 | ACF02 | 033 |  |  |
| PFNS103321C40 |  | PA-FN ; Back filling & Drainage (Zone 1-2B) | 14d | 2010-10-15 A | 2011-01-06 A | PFNS103301C40, PFNS103311C40 | 100% | 2011-04-16 | 2011-05-01 | EXCAVATION & BACKFILLING [769 m3]; EXCAVATION & BACKFILLING [1152 h]; Cost | PFNS103321C0 | PFNXA03321C0 | NEW | ACCESS | 100 | PA | C | FN | S1 | CT | 033 | 21 | SIS | 2B | S | BILL 2 | B02 | S2 | 04 | R00 | ACF02 | 033 |  |  |
| PFNS103311C40 |  | PA-FN ; Duct Bank (Zone 1-2B) | 19.88d | 2010-10-20 A | 2011-02-21 A | PFNS103301C40 FF+14d | 100% | 2011-03-23 | 2011-04-14 | CONCRETE [7752 h]; CONCRETE [195 m3]; Cost | PFNS103311C0 | PFNXA03311C0 | NEW | ACCESS | 100 | PA | C | FN | S1 | CT | 033 | 11 | SIS | 2B | S | BILL 2 | B02 | S2 | 09 | R00 | ACF02 | 033 |  |  |
| PP3S103341C40 |  | PA-P3 ; RC work - Wall & Column (Zone 1-2B) | 19.88d | 2010-11-01 A | 2011-01-02 A | PP3S103331C40 | 100% | 2011-05-18 | 2011-06-09 | CONCRETE [8472 h]; CONCRETE [213.05 m3]; Cost | PP3S103341C0 | PP3XA03341C0 | NEW |  | 100 | PA | C | P3 | S1 | CT | 033 | 41 | SIS | 2B | S | BILL 2 | B02 | S2 | 05 | R00 | ACF03 | 033 |  |  |
| PP3S103331C40 |  | PA-P3 ; SOG Concrete (Zone 1-2B) | 14d | 2010-11-30 A | 2011-04-05 A | PFNS103321C40 | 100% | 2011-05-02 | 2011-05-17 | ANTI-TERMITE [2136 h]; CONCRETE [20824 h]; CONCRETE [523.64 m3]; ANTI-TERMITE [1456.58 m2]; THERMAL & MOISTURE [678.16 m2]; THERMAL & MOISTURE [504 h]; Cost | PP3S103331C0 | PP3XA03331C0 | NEW | ACCESS | 100 | PA | C | P3 | S1 | CT | 033 | 31 | SIS | 2B | S | BILL 2 | B02 | S2 | 06 | R00 | ACF02 | 033 |  |  |
| PP2S103351C40 |  | PA-P2 ; RC work - Slab (Zone 1-2B) | 19d | 2011-01-22 A | 2011-05-08 A | PP3S103341C40 | 100% | 2011-06-11 | 2011-07-03 | CONCRETE [8472 h]; CONCRETE [213.05 m3]; Cost | PP2S103351C0 | PP2XA03351C0 | NEW |  | 100 | PA | C | P2 | S1 | CT | 033 | 51 | SIS | 2B | S | BILL 2 | B02 | S2 | 07 | R00 | ACF03 | 033 | PT |  |
| PP2S103361C40 |  | PA-P2 ; RC work - Wall & Column (Zone 1-2B) | 24d | 2011-01-27 A | 2011-05-12 A | PP2S103351C40 | 100% | 2011-07-05 | 2011-08-01 | CONCRETE [20824 h]; CONCRETE [523.64 m3]; Cost | PP2S103361C0 | PP2XA03361C0 | NEW |  | 100 | PA | C | P2 | S1 | CT | 033 | 61 | SIS | 2B | S | BILL 2 | B02 | S2 | 05 | R00 | ACF03 | 033 |  |  |
| PP1S103371C40 |  | PA-P1 ; RC work - Slab (Zone 1-2B) | 18d | 2011-02-03 A | 2011-05-14 A | PP2S103361C40 | 100% | 2011-08-02 | 2011-08-22 | CONCRETE [8472 h]; CONCRETE [213.05 m3]; Cost | PP1S103371C0 | PP1XA03371C0 | NEW |  | 100 | PA | C | P1 | S1 | CT | 033 | 71 | SIS | 2B | S | BILL 2 | B02 | S2 | 07 | R00 | ACF03 | 033 | PT |  |
| PP1S103381C40 |  | PA-P1 ; RC work - Wall & Column (Zone 1-2B) | 12d | 2011-03-08 A | 2011-06-01 A | PP1S103371C40 | 100% | 2011-03-09 | 2011-03-23 | CONCRETE [20824 h]; CONCRETE [523.64 m3]; Cost | PP1S103381C0 | PP1XA03381C0 | NEW |  | 95 | PA | C | P1 | S1 | CT | 033 | 81 | SIS | 2B | S | BILL 2 | B02 | S2 | 05 | R00 | ACF03 | 033 |  | 14007.96 |
| PGLS103391C40 |  | PA-GR ; RC work - Slab (Zone 1-2B) | 15d | 2011-04-03 A | 2011-06-04 A | PP1S103381C40 | 100% | 2011-03-23 | 2011-04-10 | CONCRETE [8472 h]; CONCRETE [213.05 m3]; Cost | PGLS103391C0 | PGLXA03391C0 | NEW |  | 90 | PA | C | GL | S1 | CT | 033 | 91 | SIS | 2B | S | BILL 2 | B02 | S2 | 07 | R00 | ACF03 | 033 | PT | 188513.56 |

| ID | WBS | Activity | Duration | Start | Finish | Predecessors | Complete | Remaining | Planned start | Planned finish | Total float | Free float | Resources | change id | IDDD | ACCESS DATES | RENZ % COMPLETE | CCAD BUILDING(SET) | CCAD PHASE(SET) | CCAD FLOOR(SET) | CCAD ZONE(SET) | CCAD WORK(SET) | CCAD SECTION(SET) | CCAD SERIAL No.(SET) | CCAD RESPONSIBILITY(SET) | CCAD Carpark code(SET) | CCAD Carpark district code(set) | CCAD CBS(SET) | CCAD BILL(SET) | CCAD HANDOVER(SET) | CCAD TAG(SET) | CCAD REV(SET) | CCADACF (SET) | CCAD SSCF | CCAD CSA | Claimed This Month | RENZ CODE | July2011 Target% Complete | user_number8 | user_integer1 | user_integer2 | user_number7 | P_811 | P_711 |
| --- | --- | --- | --- | --- | --- | --- | --- | --- | --- | --- | --- | --- | --- | --- | --- | --- | --- | --- | --- | --- | --- | --- | --- | --- | --- | --- | --- | --- | --- | --- | --- | --- | --- | --- | --- | --- | --- | --- | --- | --- | --- | --- | --- | --- |
|  | 13 | **CAR PARK ZONE S1-3** |  | 2010-05-25 | 2011-07-31 |  |  |  |  |  |  |  |  |  |  |  |  |  |  |  |  |  |  |  |  |  |  |  |  |  |  |  |  |  |  |  |  |  |  |  |  |  |  |  |
| PFNS103303C0 |  | PA-FN ; Pile Cap & Grade Beam (Zone 1-3) | 38d | 2010-05-25 A | 2011-01-13 A | MGNMI00101M0 FS+100d | 100% |  | 2010-09-16 | 2010-10-30 |  |  | ANTI-TERMITE [2128 h]; CONCRETE [20800 h]; CONCRETE [523 m3]; ANTI-TERMITE [1454.8 m2]; THERMAL & MOISTURE [677.33 m2]; THERMAL & MOISTURE [504 h]; Cost | PFNS103303C0 | PFNXA03303C0 | ACCESS | 100 | PA | C | FN | S1 | CT | 033 | 03 | SIS | 3 | S | BILL 2 | B02 | S2 | 02 | R00 | ACF02 | 033 |  |  |  |  |  |  |  |  |  |  |
| PFNS103323C0 |  | PA-FN ; Back filling & Drainage (Zone 1-3) | 14d | 2010-10-01 A | 2011-02-26 A | PFNS103303C0, PFNS103313C0 | 100% |  | 2010-11-22 | 2010-12-08 |  |  | EXCAVATION & BACKFILLING [199 m3]; EXCAVATION & BACKFILLING [304 h]; Cost | PFNS103323C0 | PFNXA03323C0 | ACCESS | 100 | PA | C | FN | S1 | CT | 033 | 23 | SIS | 3 | S | BILL 2 | B02 | S2 | 04 | R00 | ACF02 | 033 |  |  |  |  |  |  |  |  |  |  |
| PFNS103313C0 |  | PA-FN ; Duct Bank & MEP Trench (Zone 1-3) | 20d | 2011-01-10 A | 2011-02-21 A | PFNS103303C0 FF+14d | 100% |  | 2011-01-11 | 2011-02-03 |  |  | CONCRETE [7752 h]; CONCRETE [195 m3]; Cost | PFNS103313C0 | PFNXA03313C0 | ACCESS | 100 | PA | C | FN | S1 | CT | 033 | 13 | SIS | 3 | S | BILL 2 | B02 | S2 | 09 | R00 | ACF02 | 033 |  |  |  |  |  |  |  |  |  |  |
| PP3S103333C0 |  | PA-P3 ; SOG Concrete (Zone 1-3) | 14d | 2011-02-01 A | 2011-03-02 A | PFNS103323C0 | 100% |  | 2011-02-26 | 2011-03-14 |  |  | ANTI-TERMITE [688 h]; CONCRETE [6640 h]; CONCRETE [167 m3]; ANTI-TERMITE [464.53 m2]; THERMAL & MOISTURE [216.28 m2]; THERMAL & MOISTURE [168 h]; Cost | PP3S103333C0 | PP3XA03333C0 | ACCESS | 100 | PA | C | P3 | S1 | CT | 033 | 33 | SIS | 3 | S | BILL 2 | B02 | S2 | 06 | R00 | ACF02 | 033 |  |  |  |  |  |  |  |  |  |  |
| PP3S103343C0 |  | PA-P3 ; RC work - Wall & Column (Zone 1-3) | 18d | 2011-02-10 A | 2011-03-13 A | PP3S103333C0 | 100% |  | 2011-03-14 | 2011-04-04 |  |  | CONCRETE [15904 h]; CONCRETE [400 m3]; Cost | PP3S103343C0 | PP3XA03343C0 |  | 100 | PA | C | P3 | S1 | CT | 033 | 43 | SIS | 3 | S | BILL 2 | B02 | S2 | 05 | R00 | ACF03 | 033 |  |  |  |  |  |  |  |  |  |  |
| PP2S103353C0 |  | PA-P2 ; RC work - Slab (Zone 1-3) | 20d | 2011-03-13 A | 2011-03-20 A | PP2S103351C40, PP3S103343C0 | 100% |  | 2011-03-13 | 2011-04-04 |  |  | CONCRETE [6640 h]; CONCRETE [167 m3]; Cost | PP2S103353C0 | PP2XA03353C0 |  | 100 | PA | C | P2 | S1 | CT | 033 | 53 | SIS | 3 | S | BILL 2 | B02 | S2 | 07 | R00 | ACF03 | 033 | PT |  |  |  |  |  |  |  |  |  |
| PP2S103363C0 |  | PA-P2 ; RC work - Wall & Column (Zone 1-3) | 18d | 2011-04-05 A | 2011-05-30 A | PP2S103353C0 | 100% |  | 2011-04-05 | 2011-04-25 |  |  | CONCRETE [15904 h]; CONCRETE [400 m3]; Cost | PP2S103363C0 | PP2XA03363C0 |  | 100 | PA | C | P2 | S1 | CT | 033 | 63 | SIS | 3 | S | BILL 2 | B02 | S2 | 05 | R00 | ACF03 | 033 |  |  |  |  |  |  |  |  |  |  |
| PP1S103373C0 |  | PA-P1 ; RC work - Slab (Zone 1-3) | 20d | 2011-04-17 A | 2011-05-31 A | PP1S103371C40, PP2S103363C0 | 100% |  | 2011-04-26 | 2011-05-18 |  |  | CONCRETE [6640 h]; CONCRETE [167 m3]; Cost | PP1S103373C0 | PP1XA03373C0 |  | 95 | PA | C | P1 | S1 | CT | 033 | 73 | SIS | 3 | S | BILL 2 | B02 | S2 | 07 | R00 | ACF03 | 033 | PT | 55115.2 |  |  |  |  |  |  |  |  |
| PP1S103383C0 |  | PA-P1 ; RC work - Wall & Column (Zone 1-3) | 18d | 2011-05-15 A | 2011-07-31 A | PP1S103373C0 | 100% |  | 2011-07-02 | 2011-07-23 |  |  | CONCRETE [15904 h]; CONCRETE [400 m3]; Cost | PP1S103383C0 | PP1XA03383C0 |  | 10 | PA | C | P1 | S1 | CT | 033 | 83 | SIS | 3 | S | BILL 2 | B02 | S2 | 05 | R00 | ACF03 | 033 |  | 179248.98 |  |  |  |  |  |  |  |  |
| PGLS103393C0 |  | PA-GR ; RC work - Slab (Zone 1-3) | 20d | 2011-06-11 A | 2011-07-31 A | PGLS103391C40, PP1S103383C0 | 100% |  | 2011-06-20 | 2011-07-14 |  |  | CONCRETE [6640 h]; CONCRETE [167 m3]; Cost | PGLS103393C0 | PGLXA03393C0 |  |  | PA | C | GL | S1 | CT | 033 | 93 | SIS | 3 | S | BILL 2 | B02 | S2 | 07 | R00 | ACF03 | 033 | PT | 866296.07 |  |  |  |  |  |  |  |  |
|  | 5 | **CAR PARK ZONE S2-1A** |  | 2010-05-24 | 2011-07-31 |  |  |  |  |  |  |  |  |  |  |  |  |  |  |  |  |  |  |  |  |  |  |  |  |  |  |  |  |  |  |  |  |  |  |  |  |  |  |  |
| PFNS103301C50 |  | PA-FN ; Pile Cap & Grade Beam (Zone 2-1A) | 25d | 2010-05-24 A | 2011-02-02 A | MGNMI00101M0 FS+100d | 100% |  | 2011-03-01 | 2011-03-29 |  |  | ANTI-TERMITE [3520 h]; CONCRETE [34416 h]; CONCRETE [865.64 m3]; ANTI-TERMITE [2407.9 m2]; THERMAL & MOISTURE [1121.08 m2]; THERMAL & MOISTURE [840 h]; Cost | PFNS103301C0 | PFNXA03301C0 | ACCESS | 100 | PA | C | FN | S2 | CT | 033 | 01 | SIS | 1A | S | BILL 2 | B02 | S2 | 02 | R00 | ACF02 | 033 |  |  | NEW |  |  |  |  |  |  |  |
| PFNS103321C50 |  | PA-FN ; Back filling & Drainage (Zone 2-1A) | 13.88d | 2010-10-20 A | 2011-01-26 A | PFNS103301C50 | 100% |  | 2011-03-30 | 2011-04-14 |  |  | EXCAVATION & BACKFILLING [657 m3]; EXCAVATION & BACKFILLING [984 h]; Cost | PFNS103321C0 | PFNXA03321C0 | ACCESS | 100 | PA | C | FN | S2 | CT | 033 | 21 | SIS | 1A | S | BILL 2 | B02 | S2 | 04 | R00 | ACF02 | 033 |  |  | NEW |  |  |  |  |  |  |  |
| PP3S103331C50 |  | PA-P3 ; SOG Concrete (Zone 2-1A) | 14d | 2010-11-05 A | 2011-01-22 A | PFNS103321C50 | 100% |  | 2011-04-16 | 2011-05-01 |  |  | ANTI-TERMITE [1072 h]; CONCRETE [10416 h]; CONCRETE [262.01 m3]; ANTI-TERMITE [728.82 m2]; THERMAL & MOISTURE [339.33 m2]; THERMAL & MOISTURE [256 h]; Cost | PP3S103331C0 | PP3XA03331C0 | ACCESS | 100 | PA | C | P3 | S2 | CT | 033 | 31 | SIS | 1A | S | BILL 2 | B02 | S2 | 06 | R00 | ACF02 | 033 |  |  | NEW |  |  |  |  |  |  |  |
| PP3S103341C50 |  | PA-P3 ; RC work - Wall & Column (Zone 2-1A) | 20d | 2010-12-27 A | 2011-01-27 A | PP3S103331C50 | 100% |  | 2011-05-02 | 2011-05-24 |  |  | CONCRETE [26152 h]; CONCRETE [657.92 m3]; Cost | PP3S103341C0 | PP3XA03341C0 | ACCESS | 100 | PA | C | P3 | S2 | CT | 033 | 41 | SIS | 1A | S | BILL 2 | B02 | S2 | 05 | R00 | ACF03 | 033 |  |  | NEW |  |  |  |  |  |  |  |
| PP2S103351C50 |  | PA-P2 ; RC work - Slab (Zone 2-1A) | 19.88d | 2011-02-16 A | 2011-05-10 A | PP3S103341C50 | 100% |  | 2011-05-25 | 2011-06-16 |  |  | CONCRETE [10416 h]; CONCRETE [262.01 m3]; Cost | PP2S103351C0 | PP2XA03351C0 | ACCESS | 100 | PA | C | P2 | S2 | CT | 033 | 51 | SIS | 1A | S | BILL 2 | B02 | S2 | 07 | R00 | ACF03 | 033 | PT |  | NEW |  |  |  |  |  |  |  |
| PP2S103361C50 |  | PA-P2 ; RC work - Wall & Column (Zone 2-1A) | 24d | 2011-04-09 A | 2011-05-16 A | PP2S103351C50 | 100% |  | 2011-03-16 | 2011-04-12 |  |  | CONCRETE [26152 h]; CONCRETE [657.92 m3]; Cost | PP2S103361C0 | PP2XA03361C0 |  | 100 | PA | C | P2 | S2 | CT | 033 | 61 | SIS | 1A | S | BILL 2 | B02 | S2 | 05 | R00 | ACF03 | 033 |  |  | NEW |  |  |  |  |  |  |  |
| PP1S103371C50 |  | PA-P1 ; RC work - Slab (Zone 2-1A) | 18d | 2011-04-20 A | 2011-05-23 A | PP2S103361C50 | 100% |  | 2011-04-13 | 2011-05-03 |  |  | CONCRETE [10416 h]; CONCRETE [262.01 m3]; Cost | PP1S103371C0 | PP1XA03371C0 |  | 100 | PA | C | P1 | S2 | CT | 033 | 71 | SIS | 1A | S | BILL 2 | B02 | S2 | 07 | R00 | ACF03 | 033 | PT |  | NEW |  |  |  |  |  |  |  |
| PP1S103381C50 |  | PA-P1 ; RC work - Wall & Column (Zone 2-1A) | 17d | 2011-05-21 A | 2011-06-14 A | PP1S103371C50 | 100% |  | 2011-06-25 | 2011-07-16 |  |  | CONCRETE [26152 h]; CONCRETE [657.92 m3]; Cost | PP1S103381C0 | PP1XA03381C0 |  | 30 | PA | C | P1 | S2 | CT | 033 | 81 | SIS | 1A | S | BILL 2 | B02 | S2 | 05 | R00 | ACF03 | 033 |  | 167900.46 | NEW |  |  |  |  |  |  |  |
| PGLS103391C50 |  | PA-GR ; RC work - Slab (Zone 2-1A) | 20d | 2011-06-14 A | 2011-07-31 A | PP1S103381C50 | 100% |  | 2011-06-14 | 2011-07-09 |  |  | CONCRETE [10416 h]; CONCRETE [262.01 m3]; Cost | PGLS203391C0 | PGLXB03391C0 |  |  | PA | C | GL | S2 | CT | 033 | 91 | SIS | 1A | S | BILL 2 | B02 | S2 | 07 | R00 | ACF03 | 033 | PT | 264900.52 | NEW | 100 |  |  |  |  |  |  |
|  | 6 | **CAR PARK ZONE S2-1B** |  | 2010-05-24 | 2011-12-26 |  |  |  |  |  |  |  |  |  |  |  |  |  |  |  |  |  |  |  |  |  |  |  |  |  |  |  |  |  |  |  |  |  |  |  |  |  |  |  |
| PFNS103301C60 |  | PA-FN ; Pile Cap & Grade Beam (Zone 2-1B) | 25d | 2010-05-24 A | 2011-02-02 A | MGNMI00101M0 FS+100d | 100% |  | 2011-03-01 | 2011-03-29 |  |  | ANTI-TERMITE [3160 h]; CONCRETE [30864 h]; CONCRETE [776.36 m3]; ANTI-TERMITE [2159.55 m2]; THERMAL & MOISTURE [1005.45 m2]; THERMAL & MOISTURE [760 h]; Cost | PFNS103301C0 | PFNXA03301C0 | ACCESS | 100 | PA | C | FN | S2 | CT | 033 | 01 | SIS | 1B | S | BILL 2 | B02 | S2 | 02 | R00 | ACF02 | 033 |  |  | NEW |  |  |  |  |  |  |  |
| PFNS103321C60 |  | PA-FN ; Back filling & Drainage (Zone 2-1B) | 14d | 2010-10-20 A | 2011-01-26 A | PFNS103301C60, PFNS103311C60 | 100% |  | 2011-04-16 | 2011-05-01 |  |  | EXCAVATION & BACKFILLING [584 m3]; EXCAVATION & BACKFILLING [880 h]; Cost | PFNS103321C0 | PFNXA03321C0 | ACCESS | 100 | PA | C | FN | S2 | CT | 033 | 21 | SIS | 1B | S | BILL 2 | B02 | S2 | 04 | R00 | ACF02 | 033 |  |  | NEW |  |  |  |  |  |  |  |
| PP3S103331C60 |  | PA-P3 ; SOG Concrete (Zone 2-1B) | 14d | 2010-11-05 A | 2011-01-22 A | PFNS103321C60 | 100% |  | 2011-05-02 | 2011-05-17 |  |  | ANTI-TERMITE [960 h]; CONCRETE [9336 h]; CONCRETE [234.99 m3]; ANTI-TERMITE [653.66 m2]; THERMAL & MOISTURE [304.33 m2]; THERMAL & MOISTURE [232 h]; Cost | PP3S103331C0 | PP3XA03331C0 | ACCESS | 100 | PA | C | P3 | S2 | CT | 033 | 31 | SIS | 1B | S | BILL 2 | B02 | S2 | 06 | R00 | ACF02 | 033 |  |  | NEW |  |  |  |  |  |  |  |
| PFNS103311C60 |  | PA-FN ; Duct Bank (Zone 2-1B) | 19d | 2010-12-26 A | 2011-02-10 A | PFNS103301C60 FF+14d | 100% |  | 2011-04-16 | 2011-05-07 |  |  | Cost | PFNS103321C0 | PFNXA03321C0 | ACCESS | 100 | PA | C | FN | S2 | CT | 033 | 21 | SIS | 1B | S | BILL 2 | B02 | S2 | 04 | R00 | ACF02 | 033 |  |  | NEW |  |  |  |  |  |  |  |
| PP3S103341C60 |  | PA-P3 ; RC work - Wall & Column (Zone 2-1B) | 19.88d | 2010-12-27 A | 2011-01-27 A | PP3S103331C60 | 100% |  | 2011-05-18 | 2011-06-09 |  |  | CONCRETE [23464 h]; CONCRETE [590.08 m3]; Cost | PP3S103341C0 | PP3XA03341C0 |  | 100 | PA | C | P3 | S2 | CT | 033 | 41 | SIS | 1B | S | BILL 2 | B02 | S2 | 05 | R00 | ACF03 | 033 |  |  | NEW |  |  |  |  |  |  |  |
| PP2S103351C60 |  | PA-P2 ; RC work - Slab (Zone 2-1B) | 20d | 2011-05-11 A | 2011-05-28 A | PP2S103351C50, PP2S103353C0, PP3S103341C60, UP3GF22003C0 | 100% |  | 2011-06-05 | 2011-06-27 |  |  | CONCRETE [9336 h]; CONCRETE [234.99 m3]; Cost | PP2S103351C0 | PP2XA03351C0 |  | 100 | PA | C | P2 | S2 | CT | 033 | 51 | SIS | 1B | S | BILL 2 | B02 | S2 | 07 | R00 | ACF03 | 033 | PT |  | NEW |  |  |  |  |  |  |  |
| PP2S103361C60 |  | PA-P2 ; RC work - Wall & Column (Zone 2-1B) | 24d | 2011-05-25 A | 2011-06-19 A | PP2S103351C60 | 100% |  | 2011-06-29 | 2011-07-26 |  |  | CONCRETE [23464 h]; CONCRETE [590.08 m3]; Cost | PP2S103361C0 | PP2XA03361C0 |  | 30 | PA | C | P2 | S2 | CT | 033 | 61 | SIS | 1B | S | BILL 2 | B02 | S2 | 05 | R00 | ACF03 | 033 |  | 188022.98 | NEW |  |  |  |  |  |  |  |
| PP1S103381C60 |  | PA-P1 ; RC work - Wall & Column (Zone 2-1B) | 18d | 2011-06-11 A | 2011-06-23 A | PP1S103371C60 | 100% |  | 2011-07-10 | 2011-07-31 |  |  | CONCRETE [23464 h]; CONCRETE [590.08 m3]; Cost | PP1S103381C0 | PP1XA03381C0 |  |  | PA | C | P1 | S2 | CT | 033 | 81 | SIS | 1B | S | BILL 2 | B02 | S2 | 05 | R00 | ACF03 | 033 |  | 267241.15 | NEW |  |  |  |  |  |  |  |
| PP1S103371C60 |  | PA-P1 ; RC work - Slab (Zone 2-1B) | 17d | 2011-06-19 A | 2011-07-31 A | PP1S103371C50, PP1S103373C0, PP2S103361C60 | 100% |  | 2011-06-19 | 2011-07-10 |  |  | CONCRETE [9336 h]; CONCRETE [234.99 m3]; Cost | PP1S103371C0 | PP1XA03371C0 |  |  | PA | C | P1 | S2 | CT | 033 | 71 | SIS | 1B | S | BILL 2 | B02 | S2 | 07 | R00 | ACF03 | 033 | PT | 593602.56 | NEW |  |  |  |  |  |  |  |
| PGLS103391C60 |  | PA-GR ; RC work - Slab (Zone 2-1B) | 20.88d | 2011-08-10 A | 2011-10-18 | PGLS103391C50, PGLS103393C0, PP1S103381C60, PP1S103381C90 | 25% | 15.66d | 2011-11-03 | 2011-12-01 | 76.34d | 0d | CONCRETE [9336 h]; CONCRETE [234.99 m3]; Cost | PGLS103391C0 | PGLXA03391C0 |  |  | PA | C | GL | S2 | CT | 033 | 91 | SIS | 1B | S | BILL 2 | B02 | S2 | 07 | R00 | ACF03 | 033 | PT |  | NEW | 100 | 0 | 0 | 0 | 0 | 5 | 0 |
| PGLS103391C250 |  | PA-GR ; RC work - Close Opening for TC 09 (Zone 2-1B) | 21d | 2011-11-30 | 2011-12-26 | BLZTC01549C0, PGLS103391C60 |  |  |  |  | 246.64d | 168.3d | CONCRETE [88 h]; CONCRETE [2 m3]; Cost | PGLS103391C0 | PGLXA03391C0 |  |  | PA | C | GL | S2 | CT | 033 | 91 | SIS | 1B | S | BILL 2 | B02 | S2 | 07 | R00 | ACF03 | 033 | PT |  | NEW |  |  |  |  |  |  |  |

| ID | WBS | Activity | Duration | Start | Finish | Predecessors | Complete | Planned start | Planned finish | Resources | change id | IDDD | ACCESS DATES | RENZ % COMPLETE | CCAD BUILDING(SET) | CCAD PHASE(SET) | CCAD FLOOR(SET) | CCAD ZONE(SET) | CCAD WORK(SET) | CCAD SECTION(SET) | CCAD SERIAL No.(SET) | CCAD RESPONSIBILITY(SET) | CCAD Carpark code(SET) | CCAD Carpark district code(set) | CCAD CBS(SET) | CCAD BILL(SET) | CCAD HANDOVER(SET) | CCAD TAG(SET) | CCAD REV(SET) | CCADACF (SET) | CCAD SSCF | CCAD CSA | Claimed This Month | July2011 Target% Complete | P_811 | P_711 | RENZ CODE |
| --- | --- | --- | --- | --- | --- | --- | --- | --- | --- | --- | --- | --- | --- | --- | --- | --- | --- | --- | --- | --- | --- | --- | --- | --- | --- | --- | --- | --- | --- | --- | --- | --- | --- | --- | --- | --- | --- |
|  | 22 | **CAR PARK ZONE S2-2** |  | 2010-10-28 | 2011-07-31 |  |  |  |  |  |  |  |  |  |  |  |  |  |  |  |  |  |  |  |  |  |  |  |  |  |  |  |  |  |  |  |  |
| PFNS203302C0 |  | PA-FN ; Pile Cap & Grade Beam (Zone 2-2) | 20d | 2010-10-28 A | 2010-12-19 A | MGNMI00101M0 FS+100d | 100% | 2010-12-05 | 2010-12-28 | ANTI-TERMITE [3040 h]; CONCRETE [29704 h]; CONCRETE [747 m3]; ANTI-TERMITE [2077.88 m2]; THERMAL & MOISTURE [967.43 m2]; THERMAL & MOISTURE [736 h]; Cost | PFNS203302C0 | PFNXB03302C0 | ACCESS | 100 | PA | C | FN | S2 | CT | 033 | 02 | SIS | 2 | S | BILL 2 | B02 | S2 | 02 | R00 | ACF02 | 033 |  |  |  |  |  |  |
| PFNS203322C0 |  | PA-FN ; Back filling & Drainage (Zone 2-2) | 14d | 2010-11-01 A | 2011-02-10 A | PFNS203302C0, PFNS203312C0 | 100% | 2011-03-19 | 2011-04-04 | EXCAVATION & BACKFILLING [608 m3]; EXCAVATION & BACKFILLING [912 h]; Cost | PFNS203322C0 | PFNXB03322C0 | ACCESS | 100 | PA | C | FN | S2 | CT | 033 | 22 | SIS | 2 | S | BILL 2 | B02 | S2 | 04 | R00 | ACF02 | 033 |  |  |  |  |  |  |
| PFNS203312C0 |  | PA-FN ; Duct Bank (Zone 2-2) | 20d | 2011-01-13 A | 2011-02-07 A | PFNS203302C0 FF+14d | 100% | 2011-01-04 | 2011-01-27 | CONCRETE [7752 h]; CONCRETE [195 m3]; Cost | PFNS203312C0 | PFNXB03312C0 | ACCESS | 100 | PA | C | FN |  | CT | 033 | 12 |  | 2 |  |  | B02 |  | 09 | R00 | ACF02 | 033 |  |  |  |  |  |  |
| PP3S203332C0 |  | PA-P3 ; SOG Concrete (Zone 2-2) | 19d | 2011-01-27 A | 2011-02-07 A | PFNS203322C0 | 100% | 2011-01-31 | 2011-02-22 | ANTI-TERMITE [952 h]; CONCRETE [9264 h]; CONCRETE [233 m3]; ANTI-TERMITE [648.12 m2]; THERMAL & MOISTURE [301.75 m2]; THERMAL & MOISTURE [232 h]; Cost | PP3S203332C0 | PP3XB03332C0 | ACCESS | 100 | PA | C | P3 | S2 | CT | 033 | 32 | SIS | 2 | S | BILL 2 | B02 | S2 | 06 | R00 | ACF02 | 033 |  |  |  |  |  |  |
| PP3S203342C0 |  | PA-P3 ; RC work - Wall & Column (Zone 2-2) | 10d | 2011-02-08 A | 2011-03-01 A | PP3S203332C0 | 100% | 2011-03-20 | 2011-03-31 | CONCRETE [22656 h]; CONCRETE [570 m3]; Cost | PP3S203342C0 | PP3XB03342C0 | ACCESS | 100 | PA | C | P3 | S2 | CT | 033 | 42 | SIS | 2 | S | BILL 2 | B02 | S2 | 05 | R00 | ACF03 | 033 |  |  |  |  |  |  |
| PP2S203352C0 |  | PA-P2 ; RC work - Slab (Zone 2-2) | 35d | 2011-03-02 A | 2011-05-30 A | PP3S203342C0 | 100% | 2011-03-01 | 2011-04-10 | CONCRETE [9264 h]; CONCRETE [233 m3]; Cost | PP2S203352C0 | PP2XB03352C0 |  | 100 | PA | C | P2 | S2 | CT | 033 | 52 | SIS | 2 | S | BILL 2 | B02 | S2 | 07 | R00 | ACF03 | 033 | PT |  |  |  |  |  |
| PP2S203362C0 |  | PA-P2 ; RC work - Wall & Column (Zone 2-2) | 14d | 2011-04-07 A | 2011-05-31 A | PP2S203352C0 | 100% | 2011-04-11 | 2011-04-26 | CONCRETE [22656 h]; CONCRETE [570 m3]; Cost | PP2S203362C0 | PP2XB03362C0 |  | 100 | PA | C | P2 | S2 | CT | 033 | 62 | SIS | 2 | S | BILL 2 | B02 | S2 | 05 | R00 | ACF03 | 033 |  |  |  |  |  |  |
| PP1S203372C0 |  | PA-P1 ; RC work - Slab (Zone 2-2) | 18d | 2011-04-21 A | 2011-05-30 A | PP2S203362C0 | 100% | 2011-04-27 | 2011-05-17 | CONCRETE [9264 h]; CONCRETE [233 m3]; Cost | PP1S203372C0 | PP1XB03372C0 |  | 100 | PA | C | P1 | S2 | CT | 033 | 72 | SIS | 2 | S | BILL 2 | B02 | S2 | 07 | R00 | ACF03 | 033 | PT |  |  |  |  |  |
| PP1S203382C0 |  | PA-P1 ; RC work - Wall & Column (Zone 2-2) | 13d | 2011-05-23 A | 2011-06-14 A | PP1S203372C0 | 100% | 2011-06-20 | 2011-07-06 | CONCRETE [22656 h]; CONCRETE [570 m3]; Cost | PP1S203382C0 | PP1XB03382C0 |  | 10 | PA | C | P1 | S2 | CT | 033 | 82 | SIS | 2 | S | BILL 2 | B02 | S2 | 05 | R00 | ACF03 | 033 |  | 182735.66 |  |  |  |  |
| PGLS203392C0 |  | PA-GR ; RC work - Slab (Zone 2-2) | 20d | 2011-06-14 A | 2011-07-31 A | PP1S203382C0 | 100% | 2011-06-14 | 2011-07-09 | CONCRETE [9264 h]; CONCRETE [233 m3]; Cost | PGLS203392C0 | PGLXB03392C0 |  |  | PA | C | GL | S2 | CT | 033 | 92 | SIS | 2 | S | BILL 2 | B02 | S2 | 07 | R00 | ACF03 | 033 | PT | 1581275 |  |  |  |  |
|  | 23 | **CAR PARK ZONE S2-3** |  | 2010-10-30 | 2011-09-29 |  |  |  |  |  |  |  |  |  |  |  |  |  |  |  |  |  |  |  |  |  |  |  |  |  |  |  |  |  |  |  |  |
| PFNS203303C0 |  | PA-FN ; Pile Cap & Grade Beam (Zone 2-3) | 24.88d | 2010-10-30 A | 2011-03-02 A | PFNS203302C0 | 100% | 2010-12-29 | 2011-01-27 | ANTI-TERMITE [3912 h]; CONCRETE [38280 h]; CONCRETE [963 m3]; ANTI-TERMITE [2678.72 m2]; THERMAL & MOISTURE [1247.17 m2]; THERMAL & MOISTURE [936 h]; Cost | PFNS203303C0 | PFNXB03303C0 | ACCESS | 100 | PA | C | FN | S2 | CT | 033 | 03 | SIS | 3 | S | BILL 2 | B02 | S2 | 02 | R00 | ACF02 | 033 |  |  |  |  |  |  |
| PFNS203323C0 |  | PA-FN ; Back filling & Drainage (Zone 2-3) | 14d | 2010-11-01 A | 2011-03-06 A | PFNS203303C0 | 100% | 2011-03-30 | 2011-04-16 | EXCAVATION & BACKFILLING [792 m3]; EXCAVATION & BACKFILLING [1192 h]; Cost | PFNS203323C0 | PFNXB03323C0 | ACCESS | 100 | PA | C | FN | S2 | CT | 033 | 23 | SIS | 3 | S | BILL 2 | B02 | S2 | 04 | R00 | ACF02 | 033 |  |  |  |  |  |  |
| PP3S203333C0 |  | PA-P3 ; SOG Concrete (Zone 2-3) | 15d | 2011-01-25 A | 2011-03-10 A | PFNS203323C0 | 100% | 2011-02-17 | 2011-03-07 | ANTI-TERMITE [1216 h]; CONCRETE [11808 h]; CONCRETE [297 m3]; ANTI-TERMITE [826.15 m2]; THERMAL & MOISTURE [384.64 m2]; THERMAL & MOISTURE [288 h]; Cost | PP3S203333C0 | PP3XB03333C0 | ACCESS | 100 | PA | C | P3 | S2 | CT | 033 | 33 | SIS | 3 | S | BILL 2 | B02 | S2 | 06 | R00 | ACF02 | 033 |  |  |  |  |  |  |
| PP3S203343C0 |  | PA-P3 ; RC work - Wall & Column (Zone 2-3) | 10d | 2011-02-03 A | 2011-05-31 A | PP3S203333C0 | 100% | 2011-03-29 | 2011-04-10 | CONCRETE [29176 h]; CONCRETE [734 m3]; Cost | PP3S203343C0 | PP3XB03343C0 |  | 95 | PA | C | P3 | S2 | CT | 033 | 43 | SIS | 3 | S | BILL 2 | B02 | S2 | 05 | R00 | ACF03 | 033 |  | 14576.8 |  |  |  |  |
| PP2S203353C0 |  | PA-P2 ; RC work - Slab (Zone 2-3) | 21d | 2011-04-17 A | 2011-06-05 A | PP2S203352C0, PP3S203343C0 | 100% | 2011-04-11 | 2011-05-04 | CONCRETE [11808 h]; CONCRETE [297 m3]; Cost | PP2S203353C0 | PP2XB03353C0 |  | 80 | PA | C | P2 | S2 | CT | 033 | 53 | SIS | 3 | S | BILL 2 | B02 | S2 | 07 | R00 | ACF03 | 033 | PT | 320898.52 |  |  |  |  |
| PP1S203373C0 |  | PA-P1 ; RC work - Slab (Zone 2-3) | 21d | 2011-05-15 A | 2011-06-29 A | PP1S203372C0, PP2S203363C0 | 100% | 2011-07-05 | 2011-07-30 | CONCRETE [11808 h]; CONCRETE [297 m3]; Cost | PP1S203373C0 | PP1XB03373C0 |  | 10 | PA | C | P1 | S2 | CT | 033 | 73 | SIS | 3 | S | BILL 2 | B02 | S2 | 07 | R00 | ACF03 | 033 | PT | 1449631.8 |  |  |  |  |
| PP2S203363C0 |  | PA-P2 ; RC work - Wall & Column (Zone 2-3) | 20d | 2011-05-15 A | 2011-06-07 A | PP2S203353C0 | 100% | 2011-06-09 | 2011-07-04 | CONCRETE [29176 h]; CONCRETE [734 m3]; Cost | PP2S203363C0 | PP2XB03363C0 |  | 90 | PA | C | P2 | S2 | CT | 033 | 63 | SIS | 3 | S | BILL 2 | B02 | S2 | 05 | R00 | ACF03 | 033 |  | 29153.61 |  |  |  |  |
| PP1S203383C0 |  | PA-P1 ; RC work - Wall & Column (Zone 2-3) | 21d | 2011-07-10 A | 2011-08-30 A | PP1S203373C0 | 100% | 2011-06-30 | 2011-07-24 | CONCRETE [29176 h]; CONCRETE [734 m3]; Cost | PP1S203383C0 | PP1XB03383C0 |  |  | PA | C | P1 | S2 | CT | 033 | 83 | SIS | 3 | S | BILL 2 | B02 | S2 | 05 | R00 | ACF03 | 033 |  |  | 100 | 100 | 80 |  |
| PGLS203393C0 |  | PA-GR ; RC work - Slab (Zone 2-3) | 21d | 2011-08-10 A | 2011-09-29 A | PGLS203392C0, PP1S203383C0 | 100% | 2011-08-04 | 2011-08-29 | CONCRETE [11808 h]; CONCRETE [297 m3]; Cost | PGLS203393C0 | PGLXB03393C0 |  |  | PA | C | GL | S2 | CT | 033 | 93 | SIS | 3 | S | BILL 2 | B02 | S2 | 07 | R00 | ACF03 | 033 | PT |  | 100 | 25 | 0 |  |
|  | 31 | **CAR PARK ZONE S3-1** |  |  |  |  |  |  |  |  |  |  |  |  |  |  |  |  |  |  |  |  |  |  |  |  |  |  |  |  |  |  |  |  |  |  |  |
|  | 32 | **CAR PARK ZONE S3-2** |  |  |  |  |  |  |  |  |  |  |  |  |  |  |  |  |  |  |  |  |  |  |  |  |  |  |  |  |  |  |  |  |  |  |  |
|  | 33 | **CAR PARK ZONE S3-3** |  |  |  |  |  |  |  |  |  |  |  |  |  |  |  |  |  |  |  |  |  |  |  |  |  |  |  |  |  |  |  |  |  |  |  |
|  | 34 | **CAR PARK ZONE S3-4** |  |  |  |  |  |  |  |  |  |  |  |  |  |  |  |  |  |  |  |  |  |  |  |  |  |  |  |  |  |  |  |  |  |  |  |
|  | 7 | **CAR PARK ZONE S3-A** |  | 2010-10-24 | 2011-09-29 |  |  |  |  |  |  |  |  |  |  |  |  |  |  |  |  |  |  |  |  |  |  |  |  |  |  |  |  |  |  |  |  |
| PFNS103301C70 |  | PA-FN ; Pile Cap & Grade Beam (Zone 3-A) | 25d | 2010-10-24 A | 2011-01-18 A | MGNMI00101M0 FS+100d | 100% | 2011-03-01 | 2011-03-29 | ANTI-TERMITE [640 h]; CONCRETE [6264 h]; CONCRETE [157.6 m3]; ANTI-TERMITE [438.39 m2]; THERMAL & MOISTURE [204.11 m2]; THERMAL & MOISTURE [160 h]; Cost | PFNS103301C0 | PFNXA03301C0 | ACCESS | 100 | PA | C | FN | S3 | CT | 033 | 01 | SIS | A | S | BILL 2 | B02 | S2 | 02 | R00 | ACF02 | 033 |  |  |  |  |  | NEW |
| PFNS103321C70 |  | PA-FN ; Back filling & Drainage (Zone 3-A) | 14d | 2010-12-20 A | 2011-02-13 A | PFNS103301C70, PFNS103311C70 | 100% | 2011-04-16 | 2011-05-01 | EXCAVATION & BACKFILLING [607 m3]; EXCAVATION & BACKFILLING [912 h]; Cost | PFNS103321C0 | PFNXA03321C0 | ACCESS | 100 | PA | C | FN | S3 | CT | 033 | 21 | SIS | A | S | BILL 2 | B02 | S2 | 04 | R00 | ACF02 | 033 |  |  |  |  |  | NEW |
| PFNS103311C70 |  | PA-FN ; MEP Trench (Zone 3-A) | 19.88d | 2011-01-05 A | 2011-03-23 A | PFNS103301C70 FF+14d | 100% | 2011-03-23 | 2011-04-14 | CONCRETE [1984 h]; CONCRETE [49.73 m3]; Cost | PFNS103311C0 | PFNXA03311C0 | ACCESS | 100 | PA | C | FN | S3 | CT | 033 | 11 | SIS | A | S | BILL 2 | B02 | S2 | 09 | R00 | ACF02 | 033 |  |  |  |  |  | NEW |
| PP3S103331C70 |  | PA-P3 ; SOG Concrete (Zone 3-A) | 14d | 2011-01-29 A | 2011-02-24 A | PFNS103321C70 | 100% | 2011-05-02 | 2011-05-17 | ANTI-TERMITE [208 h]; CONCRETE [1984 h]; CONCRETE [49.73 m3]; ANTI-TERMITE [138.33 m2]; THERMAL & MOISTURE [64.4 m2]; THERMAL & MOISTURE [48 h]; Cost | PP3S103331C0 | PP3XA03331C0 | ACCESS | 100 | PA | C | P3 | S3 | CT | 033 | 31 | SIS | A | S | BILL 2 | B02 | S2 | 06 | R00 | ACF02 | 033 |  |  |  |  |  | NEW |
| PP3S103341C70 |  | PA-P3 ; RC work - Wall & Column (Zone 3-A) | 19.88d | 2011-02-15 A | 2011-06-01 A | PP3S103331C70 | 100% | 2011-05-18 | 2011-06-09 | CONCRETE [4792 h]; CONCRETE [120.37 m3]; Cost | PP3S103341C0 | PP3XA03341C0 |  | 90 | PA | C | P3 | S3 | CT | 033 | 41 | SIS | A | S | BILL 2 | B02 | S2 | 05 | R00 | ACF03 | 033 |  | 22630.96 |  |  |  | NEW |
| PP2S103351C70 |  | PA-P2 ; RC work - Slab (Zone 3-A) | 20d | 2011-03-09 A | 2011-07-31 A | PP2S103351C20, PP2S103351C40, PP2S103351C80, PP2S103353C0, PP3S103341C70 | 100% | 2011-04-28 | 2011-05-21 | CONCRETE [1984 h]; CONCRETE [49.73 m3]; Cost | PP2S103351C0 | PP2XA03351C0 |  | 50 | PA | C | P2 | S3 | CT | 033 | 51 | SIS | A | S | BILL 2 | B02 | S2 | 07 | R00 | ACF03 | 033 | PT |  | 100 |  |  | NEW |
| PP2S103361C70 |  | PA-P2 ; RC work - Wall & Column (Zone 3-A) | 24d | 2011-05-22 A | 2011-08-30 A | PP2S103351C70 | 100% | 2011-05-22 | 2011-06-18 | CONCRETE [4792 h]; CONCRETE [120.37 m3]; Cost | PP2S103361C0 | PP2XA03361C0 |  | 10 | PA | C | P2 | S3 | CT | 033 | 61 | SIS | A | S | BILL 2 | B02 | S2 | 05 | R00 | ACF03 | 033 |  |  |  | 100 | 10 | NEW |
| PGLS103391C70 |  | PA-GR ; RC work - Slab (Zone 3-A) | 21d | 2011-08-10 A | 2011-09-29 A | PGLS103391C20A, PGLS103391C40, PGLS103393C0, PP1S103381C70, PP1S103381C80 | 100% | 2011-10-08 | 2011-11-01 | CONCRETE [3880 h]; CONCRETE [97.5 m3]; Cost | PGLS103391C0 | PGLXA03391C0 |  |  | PA | C | GL | S3 | CT | 033 | 91 | SIS | A | S | BILL 2 | B02 | S2 | 07 | R00 | ACF03 | 033 | PT |  |  | 5 | 0 | NEW |
| PP1S103371C70 |  | PA-P1 ; RC work - Slab (Zone 3-A) | 18d | 2011-08-10 A | 2011-08-30 A | PP1S103371C20, PP1S103371C40, PP1S103371C80, PP1S103373C0, PP2S103361C70 | 100% | 2011-08-24 | 2011-09-17 | CONCRETE [1984 h]; CONCRETE [49.73 m3]; Cost | PP1S103371C0 | PP1XA03371C0 |  |  | PA | C | P1 | S3 | CT | 033 | 71 | SIS | A | S | BILL 2 | B02 | S2 | 07 | R00 | ACF03 | 033 | PT |  | 100 | 100 | 0 | NEW |
| PP1S103381C70 |  | PA-P1 ; RC work - Wall & Column (Zone 3-A) | 18d | 2011-09-05 A | 2011-09-29 A | PP1S103371C70 | 100% | 2011-09-01 | 2011-09-21 | CONCRETE [4792 h]; CONCRETE [120.37 m3]; Cost | PP1S103381C0 | PP1XA03381C0 |  |  | PA | C | P1 | S3 | CT | 033 | 81 | SIS | A | S | BILL 2 | B02 | S2 | 05 | R00 | ACF03 | 033 |  |  |  |  |  | NEW |

| ID | WBS | Activity | Duration | Start | Finish | Predecessors | Complete | Remaining | Planned start | Planned finish | Total float | Free float | Resources | change id | IDDD | RENZ CODE | ACCESS DATES | RENZ % COMPLETE | CCAD BUILDING(SET) | CCAD PHASE(SET) | CCAD FLOOR(SET) | CCAD ZONE(SET) | CCAD WORK(SET) | CCAD SECTION(SET) | CCAD SERIAL No.(SET) | CCAD RESPONSIBILITY(SET) | CCAD Carpark code(SET) | CCAD Carpark district code(set) | CCAD CBS(SET) | CCAD BILL(SET) | CCAD HANDOVER(SET) | CCAD TAG(SET) | CCAD REV(SET) | CCADACF (SET) | CCAD SSCF | CCAD CSA | Claimed This Month | July2011 Target% Complete | P_811 | P_711 |
| --- | --- | --- | --- | --- | --- | --- | --- | --- | --- | --- | --- | --- | --- | --- | --- | --- | --- | --- | --- | --- | --- | --- | --- | --- | --- | --- | --- | --- | --- | --- | --- | --- | --- | --- | --- | --- | --- | --- | --- | --- |
|  | 8 | **CAR PARK ZONE S3-B** |  | 2010-06-22 | 2011-10-19 |  |  |  |  |  |  |  |  |  |  |  |  |  |  |  |  |  |  |  |  |  |  |  |  |  |  |  |  |  |  |  |  |  |  |  |
| PFNS103301C80 |  | PA-FN ; Pile Cap & Grade Beam (Zone 3-B) | 25d | 2010-06-22 A | 2011-01-19 A | MGNMI00101M0 FS+100d | 100% |  | 2011-03-01 | 2011-03-29 |  |  | ANTI-TERMITE [1224 h]; CONCRETE [11976 h]; CONCRETE [301.13 m3]; ANTI-TERMITE [837.63 m2]; THERMAL & MOISTURE [389.99 m2]; THERMAL & MOISTURE [288 h]; Cost | PFNS103301C0 | PFNXA03301C0 | NEW | ACCESS | 100 | PA | C | FN | S3 | CT | 033 | 01 | SIS | B | S | BILL 2 | B02 | S2 | 02 | R00 | ACF02 | 033 |  |  |  |  |  |
| PFNS103311C80 |  | PA-FN ; Duct Bank (Zone 3-B) | 19.88d | 2011-01-05 A | 2011-02-10 A | PFNS103301C80 FF+14d | 100% |  | 2011-03-23 | 2011-04-14 |  |  | CONCRETE [3784 h]; CONCRETE [95.02 m3]; Cost | PFNS103311C0 | PFNXA03311C0 | NEW | ACCESS | 100 | PA | C | FN | S3 | CT | 033 | 11 | SIS | B | S | BILL 2 | B02 | S2 | 09 | R00 | ACF02 | 033 |  |  |  |  |  |
| PFNS103321C80 |  | PA-FN ; Back filling & Drainage (Zone 3-B) | 14d | 2011-01-06 A | 2011-02-12 A | PFNS103301C80, PFNS103311C80, PFNS3209500R02 FF | 100% |  | 2011-04-16 | 2011-05-01 |  |  | EXCAVATION & BACKFILLING [1145 m3]; EXCAVATION & BACKFILLING [1720 h]; Cost | PFNS103321C0 | PFNXA03321C0 | NEW | ACCESS | 100 | PA | C | FN | S3 | CT | 033 | 21 | SIS | B | S | BILL 2 | B02 | S2 | 04 | R00 | ACF02 | 033 |  |  |  |  |  |
| PP3S103341C80 |  | PA-P3 ; RC work - Wall & Column (Zone 3-B) | 19.88d | 2011-01-15 A | 2011-03-10 A | PP3S103331C80 | 100% |  | 2011-05-18 | 2011-06-09 |  |  | CONCRETE [9144 h]; CONCRETE [229.99 m3]; Cost | PP3S103341C0 | PP3XA03341C0 | NEW |  | 100 | PA | C | P3 | S3 | CT | 033 | 41 | SIS | B | S | BILL 2 | B02 | S2 | 05 | R00 | ACF03 | 033 |  |  |  |  |  |
| PP3S103331C80 |  | PA-P3 ; SOG Concrete (Zone 3-B) | 14d | 2011-01-23 A | 2011-03-05 A | PFNS103321C80 | 100% |  | 2011-05-02 | 2011-05-17 |  |  | ANTI-TERMITE [384 h]; CONCRETE [3784 h]; CONCRETE [95.02 m3]; ANTI-TERMITE [264.31 m2]; THERMAL & MOISTURE [123.06 m2]; THERMAL & MOISTURE [96 h]; Cost | PP3S103331C0 | PP3XA03331C0 | NEW | ACCESS | 100 | PA | C | P3 | S3 | CT | 033 | 31 | SIS | B | S | BILL 2 | B02 | S2 | 06 | R00 | ACF02 | 033 |  |  |  |  |  |
| PP2S103351C80 |  | PA-P2 ; RC work - Slab (Zone 3-B) | 20d | 2011-04-05 A | 2011-04-28 A | PP2S103353C0, PP3S103341C80 | 100% |  | 2011-04-05 | 2011-04-27 |  |  | CONCRETE [3784 h]; CONCRETE [95.02 m3]; Cost | PP2S103351C0 | PP2XA03351C0 | NEW |  | 100 | PA | C | P2 | S3 | CT | 033 | 51 | SIS | B | S | BILL 2 | B02 | S2 | 07 | R00 | ACF03 | 033 | PT |  |  |  |  |
| PP2S103361C80 |  | PA-P2 ; RC work - Wall & Column (Zone 3-B) | 18d | 2011-04-20 A | 2011-06-12 A | PP2S103351C80 | 100% |  | 2011-04-28 | 2011-05-18 |  |  | CONCRETE [9144 h]; CONCRETE [229.99 m3]; Cost | PP2S103361C0 | PP2XA03361C0 | NEW |  | 40 | PA | C | P2 | S3 | CT | 033 | 61 | SIS | B | S | BILL 2 | B02 | S2 | 05 | R00 | ACF03 | 033 |  | 259324.18 |  |  |  |
| PP1S103371C80 |  | PA-P1 ; RC work - Slab (Zone 3-B) | 19d | 2011-06-12 A | 2011-06-27 A | PP1S103373C0, PP2S103361C80 | 100% |  | 2011-06-12 | 2011-07-05 |  |  | CONCRETE [3784 h]; CONCRETE [95.02 m3]; Cost | PP1S103371C0 | PP1XA03371C0 | NEW |  |  | PA | C | P1 | S3 | CT | 033 | 71 | SIS | B | S | BILL 2 | B02 | S2 | 07 | R00 | ACF03 | 033 | PT | 2369380.97 |  |  |  |
| PP1S103381C80 |  | PA-P1 ; RC work - Wall & Column (Zone 3-B) | 18d | 2011-06-28 A | 2011-08-30 A | PP1S103371C80 | 100% |  | 2011-07-05 | 2011-07-26 |  |  | CONCRETE [9144 h]; CONCRETE [229.99 m3]; Cost | PP1S103381C0 | PP1XA03381C0 | NEW |  |  | PA | C | P1 | S3 | CT | 033 | 81 | SIS | B | S | BILL 2 | B02 | S2 | 05 | R00 | ACF03 | 033 |  | 192889.64 | 60 | 100 | 60 |
| PGLS103391C80 |  | PA-GR ; RC work - Slab (Zone 3-B) | 20.88d | 2011-09-05 A | 2011-10-19 | PGLS103391C70, PGLS103393C0, PP1S103381C80, PP1S103381C90 | 25% | 15.66d | 2011-11-12 | 2011-12-07 | 56.14d | 0d | CONCRETE [3880 h]; CONCRETE [97.5 m3]; Cost | PGLS103391C0 | PGLXA03391C0 | NEW |  |  | PA | C | GL | S3 | CT | 033 | 91 | SIS | B | S | BILL 2 | B02 | S2 | 07 | R00 | ACF03 | 033 | PT |  |  |  |  |
|  | 9 | **CAR PARK ZONE S3-C** |  | 2010-06-22 | 2011-09-29 |  |  |  |  |  |  |  |  |  |  |  |  |  |  |  |  |  |  |  |  |  |  |  |  |  |  |  |  |  |  |  |  |  |  |  |
| PFNS103301C90 |  | PA-FN ; Pile Cap & Grade Beam (Zone 3-C) | 25d | 2010-06-22 A | 2011-01-20 A | MGNMI00101M0 FS+100d | 100% |  | 2011-03-01 | 2011-03-29 |  |  | ANTI-TERMITE [648 h]; CONCRETE [6336 h]; CONCRETE [159.28 m3]; ANTI-TERMITE [443.06 m2]; THERMAL & MOISTURE [206.28 m2]; THERMAL & MOISTURE [160 h]; Cost | PFNS103301C0 | PFNXA03301C0 | NEW | ACCESS | 100 | PA | C | FN | S3 | CT | 033 | 01 | SIS | C | S | BILL 2 | B02 | S2 | 02 | R00 | ACF02 | 033 |  |  |  |  |  |
| PFNS103321C90 |  | PA-FN ; Back filling & Drainage (Zone 3-C) | 14d | 2011-01-08 A | 2011-03-16 A | PFNS103301C90, PFNS103311C90 | 100% |  | 2011-04-16 | 2011-05-01 |  |  | EXCAVATION & BACKFILLING [584 m3]; EXCAVATION & BACKFILLING [880 h]; Cost | PFNS103321C0 | PFNXA03321C0 | NEW | ACCESS | 100 | PA | C | FN | S3 | CT | 033 | 21 | SIS | C | S | BILL 2 | B02 | S2 | 04 | R00 | ACF02 | 033 |  |  |  |  |  |
| PFNS103311C90 |  | PA-FN ; Duct Bank (Zone 3-C) | 19.88d | 2011-01-18 A | 2011-01-25 A | PFNS103301C90 FF+14d | 100% |  | 2011-03-23 | 2011-04-14 |  |  | CONCRETE [2008 h]; CONCRETE [50.26 m3]; Cost | PFNS103311C0 | PFNXA03311C0 | NEW | ACCESS | 100 | PA | C | FN | S3 | CT | 033 | 11 | SIS | C | S | BILL 2 | B02 | S2 | 09 | R00 | ACF02 | 033 |  |  |  |  |  |
| PP3S103331C90 |  | PA-P3 ; SOG Concrete (Zone 3-C) | 14d | 2011-02-28 A | 2011-05-04 A | PFNS103321C90 | 100% |  | 2011-02-28 | 2011-03-15 |  |  | ANTI-TERMITE [208 h]; CONCRETE [2008 h]; CONCRETE [50.26 m3]; ANTI-TERMITE [139.81 m2]; THERMAL & MOISTURE [65.09 m2]; THERMAL & MOISTURE [48 h]; Cost | PP3S103331C0 | PP3XA03331C0 | NEW | ACCESS | 100 | PA | C | P3 | S3 | CT | 033 | 31 | SIS | C | S | BILL 2 | B02 | S2 | 06 | R00 | ACF02 | 033 |  |  |  |  |  |
| PP3S103341C90 |  | PA-P3 ; RC work - Wall & Column (Zone 3-C) | 19.88d | 2011-03-16 A | 2011-06-04 A | PP3S103331C90 | 100% |  | 2011-03-16 | 2011-04-07 |  |  | CONCRETE [4840 h]; CONCRETE [121.65 m3]; Cost | PP3S103341C0 | PP3XA03341C0 | NEW |  | 80 | PA | C | P3 | S3 | CT | 033 | 41 | SIS | C | S | BILL 2 | B02 | S2 | 05 | R00 | ACF03 | 033 |  | 45794.46 |  |  |  |
| PP1S103371C90 |  | PA-P1 ; RC work - Slab (Zone 3-C) | 18d | 2011-08-10 A | 2011-09-29 A | PP1S103371C80, PP1S103373C0, PP1S203372C0, PP2S103361C90 | 100% |  | 2011-09-22 | 2011-10-12 |  |  | CONCRETE [2008 h]; CONCRETE [50.26 m3]; Cost | PP1S103371C0 | PP1XA03371C0 | NEW |  |  | PA | C | P1 | S3 | CT | 033 | 71 | SIS | C | S | BILL 2 | B02 | S2 | 07 | R00 | ACF03 | 033 | PT |  |  | 5 | 0 |
| PP2S103351C90 |  | PA-P2 ; RC work - Slab (Zone 3-C) | 20d | 2011-08-10 A | 2011-08-30 A | PP2S103351C80, PP2S103353C0, PP2S203352C0, PP3S103341C90 | 100% |  | 2011-07-31 | 2011-08-22 |  |  | CONCRETE [2008 h]; CONCRETE [50.26 m3]; Cost | PP2S103351C0 | PP2XA03351C0 | NEW |  |  | PA | C | P2 | S3 | CT | 033 | 51 | SIS | C | S | BILL 2 | B02 | S2 | 07 | R00 | ACF03 | 033 | PT |  |  | 100 | 0 |
| PP2S103361C90 |  | PA-P2 ; RC work - Wall & Column (Zone 3-C) | 24d | 2011-08-10 A | 2011-09-29 A | PP2S103351C90 | 100% |  | 2011-08-23 | 2011-09-21 |  |  | CONCRETE [4840 h]; CONCRETE [121.65 m3]; Cost | PP2S103361C0 | PP2XA03361C0 | NEW |  |  | PA | C | P2 | S3 | CT | 033 | 61 | SIS | C | S | BILL 2 | B02 | S2 | 05 | R00 | ACF03 | 033 |  |  |  | 5 | 0 |
| PP1S103381C90 |  | PA-P1 ; RC work - Wall & Column (Zone 3-C) | 18d | 2011-09-05 A | 2011-09-29 A | PP1S103371C90, PP2S103351C90 | 100% |  | 2011-10-17 | 2011-11-10 |  |  | CONCRETE [4840 h]; CONCRETE [121.65 m3]; Cost | PP1S103381C0 | PP1XA03381C0 | NEW |  |  | PA | C | P1 | S3 | CT | 033 | 81 | SIS | B | S | BILL 2 | B02 | S2 | 05 | R00 | ACF03 | 033 |  |  |  |  |  |
|  | 41 | **CAR PARK ZONE S4-1** |  | 2010-05-31 | 2012-05-08 |  |  |  |  |  |  |  |  |  |  |  |  |  |  |  |  |  |  |  |  |  |  |  |  |  |  |  |  |  |  |  |  |  |  |  |
| PFNS403301C0 |  | PA-FN ; Pile Cap & Grade Beam (Zone 4-1) | 24.88d | 2010-05-31 A | 2010-08-09 A | MGNMI00101M0 FS+150d | 100% |  | 2011-04-07 | 2011-05-05 |  |  | ANTI-TERMITE [6952 h]; CONCRETE [67864 h]; CONCRETE [1707 m3]; ANTI-TERMITE [4748.25 m2]; THERMAL & MOISTURE [2210.72 m2]; THERMAL & MOISTURE [1656 h]; Cost | PFNS403301C0 | PFNXD03301C0 |  | ACCESS | 100 | PA | C | FN | S4 | CT | 033 | 01 | SIS | 1 | S | BILL 2 | B02 | S2 | 02 | R00 | ACF02 | 033 |  |  |  |  |  |
| PFNS403321C0 |  | PA-FN ; Back filling & Drainage (Zone 4-1) | 14d | 2010-08-15 A | 2011-05-29 A | PFNS403301C0, PFNS403311C0 | 100% |  | 2011-05-23 | 2011-06-07 |  |  | EXCAVATION & BACKFILLING [899 m3]; EXCAVATION & BACKFILLING [1344 h]; Cost | PFNS403321C0 | PFNXD03321C0 |  | ACCESS | 100 | PA | C | FN | S4 | CT | 033 | 21 | SIS | 1 | S | BILL 2 | B02 | S2 | 04 | R00 | ACF02 | 033 |  |  |  |  |  |
| PFNS403311C0 |  | PA-FN ; Duct Bank & MEP Trench (Zone 4-1) | 20.08d | 2010-12-30 A | 2011-04-28 A | PFNS403301C0 FF+14d | 100% |  | 2011-04-07 | 2011-05-01 |  |  | CONCRETE [7752 h]; CONCRETE [195 m3]; Cost | PFNS403311C0 | PFNXD03311C0 |  | ACCESS | 100 | PA | C | FN | S4 | CT | 033 | 11 | SIS | 1 | S | BILL 2 | B02 | S2 | 09 | R00 | ACF02 | 033 |  |  |  |  |  |
| PP3S403331C0 |  | PA-P3 ; SOG Concrete (Zone 4-1) | 21d | 2011-03-15 A | 2011-05-31 A | PFNS403311C0 SS, PFNS403321C0 | 100% |  | 2011-03-09 | 2011-04-03 |  |  | ANTI-TERMITE [2104 h]; CONCRETE [20560 h]; CONCRETE [517 m3]; ANTI-TERMITE [1438.11 m2]; THERMAL & MOISTURE [669.56 m2]; THERMAL & MOISTURE [504 h]; Cost | PP3S403331C0 | PP3XD03331C0 |  | ACCESS | 100 | PA | C | P3 | S4 | CT | 033 | 31 | SIS | 1 | S | BILL 2 | B02 | S2 | 06 | R00 | ACF02 | 033 |  |  |  |  |  |
| PP3S403341C0 |  | PA-P3 ; RC work - Wall & Column (Zone 4-1) | 10d | 2011-04-25 A | 2011-05-31 A | PP3S403331C0 | 100% |  | 2011-04-03 | 2011-04-14 |  |  | CONCRETE [51552 h]; CONCRETE [1297 m3]; Cost | PP3S403341C0 | PP3XD03341C0 |  |  | 100 | PA | C | P3 | S4 | CT | 033 | 41 | SIS | 1 | S | BILL 2 | B02 | S2 | 05 | R00 | ACF03 | 033 |  |  |  |  |  |
| PP2S403351C0 |  | PA-P2 ; RC work - Slab (Zone 4-1) | 20d | 2011-05-15 A | 2011-06-12 A | PP3S403341C0 | 100% |  | 2011-06-11 | 2011-07-05 |  |  | CONCRETE [20560 h]; CONCRETE [517 m3]; Cost | PP2S403351C0 | PP2XD03351C0 |  |  | 50 | PA | C | P2 | S4 | CT | 033 | 51 | SIS | 1 | S | BILL 2 | B02 | S2 | 07 | R00 | ACF03 | 033 | PT | 803975.83 |  |  |  |
| PP2S403361C0 |  | PA-P2 ; RC work - Wall & Column (Zone 4-1) | 10d | 2011-06-12 A | 2011-06-16 A | PP2S403351C0 | 100% |  | 2011-06-12 | 2011-06-23 |  |  | CONCRETE [51552 h]; CONCRETE [1297 m3]; Cost | PP2S403361C0 | PP2XD03361C0 |  |  |  | PA | C | P2 | S4 | CT | 033 | 61 | SIS | 1 | S | BILL 2 | B02 | S2 | 05 | R00 | ACF03 | 033 |  | 292164.4 |  |  |  |
| PP1S403371C0 |  | PA-P1 ; RC work - Slab (Zone 4-1) | 20d | 2011-06-18 A | 2011-06-29 A | PP2S403361C0 | 100% |  | 2011-06-23 | 2011-07-18 |  |  | CONCRETE [20560 h]; CONCRETE [517 m3]; Cost | PP1S403371C0 | PP1XD03371C0 |  |  |  | PA | C | P1 | S4 | CT | 033 | 71 | SIS | 1 | S | BILL 2 | B02 | S2 | 07 | R00 | ACF03 | 033 | PT | 1618882.53 |  |  |  |
| PGLS403391C0 |  | PA-GR ; RC work - Slab (Zone 4-1) | 20.88d | 2011-07-10 A | 2011-07-31 A | PP1S403381C0 | 100% |  | 2011-07-12 | 2011-08-04 |  |  | CONCRETE [20560 h]; CONCRETE [517 m3]; Cost | PGLS403391C0 | PGLXD03391C0 |  |  |  | PA | C | GL | S4 | CT | 033 | 91 | SIS | 1 | S | BILL 2 | B02 | S2 | 07 | R00 | ACF03 | 033 | PT |  | 100 |  |  |
| PP1S403381C0 |  | PA-P1 ; RC work - Wall & Column (Zone 4-1) | 10d | 2011-07-10 A | 2011-07-31 A | PP1S403371C0 | 100% |  | 2011-06-30 | 2011-07-11 |  |  | CONCRETE [51552 h]; CONCRETE [1297 m3]; Cost | PP1S403381C0 | PP1XD03381C0 |  |  |  | PA | C | P1 | S4 | CT | 033 | 81 | SIS | 1 | S | BILL 2 | B02 | S2 | 05 | R00 | ACF03 | 033 |  |  | 100 |  |  |
| PGLS403391C10 |  | PA-GR ; RC work - Close Opening for Hoist 6 (Zone 4-1) | 21d | 2012-04-14 | 2012-05-08 | BLZHC01586C0, PGLS403391C0 |  |  |  |  | 41.48d | 0d | CONCRETE [88 h]; CONCRETE [2 m3]; Cost | PGLS403391C0 | PGLXD03391C0 | NEW |  |  | PA |  | GL |  | CT | 033 | 91 |  | 1 | S |  | B02 |  | 07 | R00 | ACF03 | 033 |  |  |  |  |  |

| ID | WBS | Activity | Duration | Start | Finish | Predecessors | Complete | Remaining | Planned start | Planned finish | Total float | Free float | Resources | change id | IDDD | ACCESS DATES | RENZ % COMPLETE | CCAD BUILDING(SET) | CCAD PHASE(SET) | CCAD FLOOR(SET) | CCAD ZONE(SET) | CCAD WORK(SET) | CCAD SECTION(SET) | CCAD SERIAL No.(SET) | CCAD RESPONSIBILITY(SET) | CCAD Carpark code(SET) | CCAD Carpark district code(set) | CCAD CBS(SET) | CCAD BILL(SET) | CCAD HANDOVER(SET) | CCAD TAG(SET) | CCAD REV(SET) | CCADACF (SET) | CCAD SSCF | Claimed This Month | P_811 | P_711 | CCAD CSA | RENZ CODE | July2011 Target% Complete |
| --- | --- | --- | --- | --- | --- | --- | --- | --- | --- | --- | --- | --- | --- | --- | --- | --- | --- | --- | --- | --- | --- | --- | --- | --- | --- | --- | --- | --- | --- | --- | --- | --- | --- | --- | --- | --- | --- | --- | --- | --- |
|  | 42 | **CAR PARK ZONE S4-2** |  | 2010-06-21 | 2012-06-18 |  |  |  |  |  |  |  |  |  |  |  |  |  |  |  |  |  |  |  |  |  |  |  |  |  |  |  |  |  |  |  |  |  |  |  |
| PFNS403302C0 |  | PA-FN ; Pile Cap & Grade Beam (Zone 4-2) | 25d | 2010-06-21 A | 2011-05-31 A | CR5S105101C0, PFNS403301C0 | 100% |  | 2011-05-07 | 2011-06-04 |  |  | ANTI-TERMITE [4624 h]; CONCRETE [45192 h]; CONCRETE [1137 m3]; ANTI-TERMITE [3162.72 m2]; THERMAL & MOISTURE [1472.52 m2]; THERMAL & MOISTURE [1104 h]; Cost | PFNS403302C0 | PFNXD03302C0 | ACCESS | 100 | PA | C | FN | S4 | CT | 033 | 02 | SIS | 2 | S | BILL 2 | B02 | S2 | 02 | R00 | ACF02 | 033 |  |  |  |  |  |  |
| PFNS403322C0 |  | PA-FN ; Back filling & Drainage (Zone 4-2) | 13d | 2010-08-15 A | 2011-05-30 A | PFNS403302C0, PFNS403312C0 | 100% |  | 2011-06-21 | 2011-07-06 |  |  | EXCAVATION & BACKFILLING [1349 m3]; EXCAVATION & BACKFILLING [2032 h]; Cost | PFNS403322C0 | PFNXD03322C0 | ACCESS | 100 | PA | C | FN | S4 | CT | 033 | 22 | SIS | 2 | S | BILL 2 | B02 | S2 | 04 | R00 | ACF02 | 033 |  |  |  |  |  |  |
| PFNS403312C0 |  | PA-FN ; Duct Bank & MEP Trench (Zone 4-2) | 20d | 2011-01-18 A | 2011-06-13 A | PFNS403302C0 FF+7d | 100% |  | 2011-04-26 | 2011-05-19 |  |  | CONCRETE [7752 h]; CONCRETE [195 m3]; Cost | PFNS403312C0 | PFNXD03312C0 | ACCESS | 40 | PA | C | FN | S4 | CT | 033 | 12 | SIS | 2 | S | BILL 2 | B02 | S2 | 09 | R00 | ACF02 | 033 | 437058.88 |  |  |  |  |  |
| PP3S403332C0 |  | PA-P3 ; SOG Concrete (Zone 4-2) | 14d | 2011-06-12 A | 2011-09-29 A | PFNS403322C0, PGLS403391C0 FS+26d | 100% |  | 2011-09-25 | 2011-10-11 |  |  | ANTI-TERMITE [1416 h]; CONCRETE [13840 h]; CONCRETE [348 m3]; ANTI-TERMITE [968.01 m2]; THERMAL & MOISTURE [450.69 m2]; THERMAL & MOISTURE [336 h]; Cost | PP3S403332C0 | PP3XD03332C0 | ACCESS |  | PA | C | P3 | S4 | CT | 033 | 32 | SIS | 2 | S | BILL 2 | B02 | S2 | 06 | R00 | ACF02 | 033 | 636691.59 |  |  |  |  |  |
| PP3S403342C0 |  | PA-P3 ; RC work - Wall & Column (Zone 4-2) | 10d | 2011-08-10 A | 2011-10-09 | PP3S403332C0 | 20% | 8d | 2011-09-07 | 2011-09-19 | 11.2d | 0d | CONCRETE [34432 h]; CONCRETE [866 m3]; Cost | PP3S403342C0 | PP3XD03342C0 |  |  | PA | C | P3 | S4 | CT | 033 | 42 | SIS | 2 | S | BILL 2 | B02 | S2 | 05 | R00 | ACF03 | 033 |  | 5 | 0 |  |  |  |
| PP2S403352C0 |  | PA-P2 ; RC work - Slab (Zone 4-2) | 18d | 2011-09-10 A | 2011-10-27 | PP2S103351C70, PP2S103351C80, PP3S403342C0 | 15% | 15.3d | 2011-09-19 | 2011-10-10 | 11.2d | 0d | CONCRETE [13840 h]; CONCRETE [348 m3]; Cost | PP2S403352C0 | PP2XD03352C0 |  |  | PA | C | P2 | S4 | CT | 033 | 52 | SIS | 2 | S | BILL 2 | B02 | S2 | 07 | R00 | ACF03 | 033 |  |  |  | PT |  |  |
| PP2S403362C0 |  | PA-P2 ; RC work - Wall & Column (Zone 4-2) | 10d | 2011-10-27 | 2011-11-12 | PP2S403352C0 |  |  |  |  | 11.2d | 0d | CONCRETE [34432 h]; CONCRETE [866 m3]; Cost | PP2S403362C0 | PP2XD03362C0 |  |  | PA | C | P2 | S4 | CT | 033 | 62 | SIS | 2 | S | BILL 2 | B02 | S2 | 05 | R00 | ACF03 | 033 |  |  |  |  |  |  |
| PP1S403372C0 |  | PA-P1 ; RC work - Slab (Zone 4-2) | 18d | 2011-11-12 | 2011-12-05 | PP1S103371C70, PP1S103371C80, PP2S403362C0 |  |  |  |  | 11.2d | 0d | CONCRETE [13840 h]; CONCRETE [348 m3]; Cost | PP1S403372C0 | PP1XD03372C0 |  |  | PA | C | P1 | S4 | CT | 033 | 72 | SIS | 2 | S | BILL 2 | B02 | S2 | 07 | R00 | ACF03 | 033 |  |  |  | PT |  |  |
| PP1S403382C0 |  | PA-P1 ; RC work - Wall & Column (Zone 4-2) | 10d | 2011-12-05 | 2011-12-17 | PP1S403372C0 |  |  |  |  | 11.2d | 0d | CONCRETE [34432 h]; CONCRETE [866 m3]; Cost | PP1S403382C0 | PP1XD03382C0 |  |  | PA | C | P1 | S4 | CT | 033 | 82 | SIS | 2 | S | BILL 2 | B02 | S2 | 05 | R00 | ACF03 | 033 |  |  |  |  |  |  |
| PGLS403392C0 |  | PA-GR ; RC work - Slab (Zone 4-2) | 18d | 2011-12-17 | 2012-01-08 | PGLS103391C70, PGLS103391C80, PP1S403382C0 |  |  |  |  | 11.2d | 0d | CONCRETE [13840 h]; CONCRETE [348 m3]; Cost | PGLS403392C0 | PGLXD03392C0 |  |  | PA | C | GL | S4 | CT | 033 | 92 | SIS | 2 | S | BILL 2 | B02 | S2 | 07 | R00 | ACF03 | 033 |  |  |  | PT |  |  |
| PGLS403392C20 |  | PA-GR ; RC work - Close Opening for Hoist 1 (Zone 4-2) | 21d | 2012-05-24 | 2012-06-18 | BLZHC01581C0, PGLS403392C0 |  |  |  |  | 50d | 29.8d | CONCRETE [88 h]; CONCRETE [2 m3]; Cost | PGLS403392C0 | PGLXD03392C0 |  |  | PA | C | GL | S4 | CT | 033 | 92 | SIS | 2 | S | BILL 2 | B02 | S2 | 07 | R00 | ACF03 | 033 |  |  |  | PT | NEW |  |
|  | 51 | **CAR PARK ZONE S5-1** |  | 2010-05-30 | 2012-05-20 |  |  |  |  |  |  |  |  |  |  |  |  |  |  |  |  |  |  |  |  |  |  |  |  |  |  |  |  |  |  |  |  |  |  |  |
| PFNS503301C0 |  | PA-FN ; Pile Cap & Grade Beam (Zone 5-1) | 24d | 2010-05-30 A | 2010-08-30 A | PFNS403302C0 | 100% |  | 2011-06-05 | 2011-07-03 |  |  | ANTI-TERMITE [4008 h]; CONCRETE [39120 h]; CONCRETE [984 m3]; ANTI-TERMITE [2737.13 m2]; THERMAL & MOISTURE [1274.37 m2]; THERMAL & MOISTURE [960 h]; Cost | PFNS503301C0 | PFNXE03301C0 | ACCESS | 100 | PA | C | FN | S5 | CT | 033 | 01 | SIS | 1 | S | BILL 2 | B02 | S2 | 02 | R00 | ACF02 | 033 |  |  |  |  |  |  |
| PFNS503321C0 |  | PA-FN ; Back filling & Drainage (Zone 5-1) | 14d | 2010-08-15 A | 2011-06-13 A | PFNS503301C0, PFNS503311C0 | 100% |  | 2011-07-21 | 2011-08-06 |  |  | EXCAVATION & BACKFILLING [775 m3]; EXCAVATION & BACKFILLING [1168 h]; Cost | PFNS503321C0 | PFNXE03321C0 | ACCESS | 90 | PA | C | FN | S5 | CT | 033 | 21 | SIS | 1 | S | BILL 2 | B02 | S2 | 04 | R00 | ACF02 | 033 | 28576.95 |  |  |  |  |  |
| PFNS503311C0 |  | PA-FN ; Duct Bank (Zone 5-1) | 20d | 2011-02-10 A | 2011-06-11 A | PFNS503301C0 | 100% |  | 2011-04-19 | 2011-05-12 |  |  | CONCRETE [7752 h]; CONCRETE [195 m3]; Cost | PFNS503311C0 | PFNXE03311C0 | ACCESS | 50 | PA | C | FN | S5 | CT | 033 | 11 | SIS | 1 | S | BILL 2 | B02 | S2 | 09 | R00 | ACF02 | 033 | 268632.76 |  |  |  |  |  |
| PP3S503331C0 |  | PA-P3 ; SOG Concrete (Zone 5-1) | 14d | 2012-01-25 | 2012-02-12 | PFNS503321C0, PGLS403392C0 FS+15d, PV10FN03300R2 FF |  |  |  |  | 11.2d | 0d | ANTI-TERMITE [1240 h]; CONCRETE [12048 h]; CONCRETE [303 m3]; ANTI-TERMITE [842.84 m2]; THERMAL & MOISTURE [392.41 m2]; THERMAL & MOISTURE [304 h]; Cost | PP3S503331C0 | PP3XE03331C0 | ACCESS |  | PA | C | P3 | S5 | CT | 033 | 31 | SIS | 1 | S | BILL 2 | B02 | S2 | 06 | R00 | ACF02 | 033 |  |  |  |  |  |  |
| PP3S503341C0 |  | PA-P3 ; RC work - Wall & Column (Zone 5-1) | 9.88d | 2012-02-12 | 2012-02-23 | PP3S503331C0 |  |  |  |  | 18.95d | 0d | CONCRETE [29776 h]; CONCRETE [749 m3]; Cost | PP3S503341C0 | PP3XE03341C0 |  |  | PA | C | P3 | S5 | CT | 033 | 41 | SIS | 1 | S | BILL 2 | B02 | S2 | 05 | R00 | ACF03 | 033 |  |  |  |  |  |  |
| PP2S503351C0 |  | PA-P2 ; RC work - Slab (Zone 5-1) | 17.88d | 2012-02-23 | 2012-03-15 | PP2S103351C80, PP2S103351C90, PP2S403352C0, PP3S503341C0 |  |  |  |  | 18.95d | 0d | CONCRETE [12048 h]; CONCRETE [303 m3]; Cost | PP2S503351C0 | PP2XE03351C0 |  |  | PA | C | P2 | S5 | CT | 033 | 51 | SIS | 1 | S | BILL 2 | B02 | S2 | 07 | R00 | ACF03 | 033 |  |  |  | PT |  |  |
| PP2S503361C0 |  | PA-P2 ; RC work - Wall & Column (Zone 5-1) | 10d | 2012-03-15 | 2012-03-27 | PP2S503351C0 |  |  |  |  | 18.95d | 0d | CONCRETE [29776 h]; CONCRETE [749 m3]; Cost | PP2S503361C0 | PP2XE03361C0 |  |  | PA | C | P2 | S5 | CT | 033 | 61 | SIS | 1 | S | BILL 2 | B02 | S2 | 05 | R00 | ACF03 | 033 |  |  |  |  |  |  |
| PP1S503371C0 |  | PA-P1 ; RC work - Slab (Zone 5-1) | 18d | 2012-03-27 | 2012-04-17 | PP1S103371C80, PP1S103371C90, PP1S403372C0, PP2S503361C0 |  |  |  |  | 18.95d | 0d | CONCRETE [12048 h]; CONCRETE [303 m3]; Cost | PP1S503371C0 | PP1XE03371C0 |  |  | PA | C | P1 | S5 | CT | 033 | 71 | SIS | 1 | S | BILL 2 | B02 | S2 | 07 | R00 | ACF03 | 033 |  |  |  | PT |  |  |
| PP1S503381C0 |  | PA-P1 ; RC work - Wall & Column (Zone 5-1) | 10d | 2012-04-17 | 2012-04-29 | PP1S503371C0 |  |  |  |  | 18.95d | 0d | CONCRETE [29776 h]; CONCRETE [749 m3]; Cost | PP1S503381C0 | PP1XE03381C0 |  |  | PA | C | P1 | S5 | CT | 033 | 81 | SIS | 1 | S | BILL 2 | B02 | S2 | 05 | R00 | ACF03 | 033 |  |  |  |  |  |  |
| PGLS503391C0 |  | PA-GR ; RC work - Slab (Zone 5-1) | 18d | 2012-04-29 | 2012-05-20 | PGLS103391C80, PGLS403392C0, PP1S503381C0 |  |  |  |  | 18.95d | 0d | CONCRETE [12048 h]; CONCRETE [303 m3]; Cost | PGLS503391C0 | PGLXE03391C0 |  |  | PA | C | GL | S5 | CT | 033 | 91 | SIS | 1 | S | BILL 2 | B02 | S2 | 07 | R00 | ACF03 | 033 |  |  |  | PT |  |  |
|  | 52 | **CAR PARK ZONE S5-2** |  | 2010-06-09 | 2012-07-15 |  |  |  |  |  |  |  |  |  |  |  |  |  |  |  |  |  |  |  |  |  |  |  |  |  |  |  |  |  |  |  |  |  |  |  |
| PFNS503302C0 |  | PA-FN ; Pile Cap & Grade Beam (Zone 5-2) | 25d | 2010-06-09 A | 2011-09-29 A | PFNS503301C0 | 100% |  | 2011-07-05 | 2011-08-02 |  |  | ANTI-TERMITE [6240 h]; CONCRETE [60936 h]; CONCRETE [1533 m3]; ANTI-TERMITE [4264.25 m2]; THERMAL & MOISTURE [1985.37 m2]; THERMAL & MOISTURE [1488 h]; Cost | PFNS503302C0 | PFNXE03302C0 | ACCESS | 60 | PA | C | FN | S5 | CT | 033 | 02 | SIS | 2 | S | BILL 2 | B02 | S2 | 02 | R00 | ACF02 | 033 | 612608.05 | 90 | 75 |  |  |  |
| PFNS503322C0 |  | PA-FN ; Back filling & Drainage (Zone 5-2) | 13d | 2010-11-10 A | 2011-07-31 A | PFNS503302C0, PFNS503312C0 | 100% |  | 2011-06-15 | 2011-07-02 |  |  | EXCAVATION & BACKFILLING [1212 m3]; EXCAVATION & BACKFILLING [1824 h]; Cost | PFNS503322C0 | PFNXE03322C0 | ACCESS | 40 | PA | C | FN | S5 | CT | 033 | 22 | SIS | 2 | S | BILL 2 | B02 | S2 | 04 | R00 | ACF02 | 033 | 178789.26 |  |  |  |  |  |
| PFNS503312C0 |  | PA-FN ; Duct Bank (Zone 5-2) | 20d | 2011-02-14 A | 2011-07-31 A | PFNS503302C0, AFNGN03300R02 FF | 100% |  | 2011-05-17 | 2011-06-09 |  |  | CONCRETE [7752 h]; CONCRETE [195 m3]; Cost | PFNS503312C0 | PFNXE03312C0 | ACCESS | 60 | PA | C | FN | S5 | CT | 033 | 12 | SIS | 2 | S | BILL 2 | B02 | S2 | 09 | R00 | ACF02 | 033 | 336135.36 |  |  |  |  |  |
| PP3S503332C0 |  | PA-P3 ; SOG Concrete (Zone 5-2) | 14d | 2011-07-10 A | 2012-03-03 | PFNS503322C0, PP3S503331C0 FS+14d | 75% | 3.5d | 2011-10-22 | 2011-11-10 | 11.2d | 0d | ANTI-TERMITE [1896 h]; CONCRETE [18480 h]; CONCRETE [465 m3]; ANTI-TERMITE [1293.46 m2]; THERMAL & MOISTURE [602.22 m2]; THERMAL & MOISTURE [456 h]; Cost | PP3S503332C0 | PP3XE03332C0 | ACCESS |  | PA | C | P3 | S5 | CT | 033 | 32 | SIS | 2 | S | BILL 2 | B02 | S2 | 06 | R00 | ACF02 | 033 |  | 25 | 20 |  |  | 25 |
| PP3S503342C0 |  | PA-P3 ; RC work - Wall & Column (Zone 5-2) | 10d | 2012-03-03 | 2012-03-14 | PP3S503332C0 |  |  |  |  | 11.2d | 0d | CONCRETE [46360 h]; CONCRETE [1166 m3]; Cost | PP3S503342C0 | PP3XE03342C0 |  |  | PA | C | P3 | S5 | CT | 033 | 42 | SIS | 2 | S | BILL 2 | B02 | S2 | 05 | R00 | ACF03 | 033 |  |  |  |  |  | 20 |
| PP2S503352C0 |  | PA-P2 ; RC work - Slab (Zone 5-2) | 21d | 2012-03-14 | 2012-04-08 | PP2S603351C0, PP2S703351C0, PP3S503342C0 |  |  |  |  | 11.2d | 0d | CONCRETE [18480 h]; CONCRETE [465 m3]; Cost | PP2S503352C0 | PP2XE03352C0 |  |  | PA | C | P2 | S5 | CT | 033 | 52 | SIS | 2 | S | BILL 2 | B02 | S2 | 07 | R00 | ACF03 | 033 |  |  |  | PT |  |  |
| PP2S503362C0 |  | PA-P2 ; RC work - Wall & Column (Zone 5-2) | 10d | 2012-04-08 | 2012-04-19 | PP2S503352C0 |  |  |  |  | 11.2d | 0d | CONCRETE [46360 h]; CONCRETE [1166 m3]; Cost | PP2S503362C0 | PP2XE03362C0 |  |  | PA | C | P2 | S5 | CT | 033 | 62 | SIS | 2 | S | BILL 2 | B02 | S2 | 05 | R00 | ACF03 | 033 |  |  |  |  |  |  |
| PP1S503372C0 |  | PA-P1 ; RC work - Slab (Zone 5-2) | 21d | 2012-04-19 | 2012-05-14 | PP1S603371C0, PP1S703371C0, PP2S503362C0 |  |  |  |  | 11.2d | 0d | CONCRETE [18480 h]; CONCRETE [465 m3]; Cost | PP1S503372C0 | PP1XE03372C0 |  |  | PA | C | P1 | S5 | CT | 033 | 72 | SIS | 2 | S | BILL 2 | B02 | S2 | 07 | R00 | ACF03 | 033 |  |  |  | PT |  |  |
| PP1S503382C0 |  | PA-P1 ; RC work - Wall & Column (Zone 5-2) | 10d | 2012-05-14 | 2012-05-26 | PP1S503372C0 |  |  |  |  | 11.2d | 0d | CONCRETE [46360 h]; CONCRETE [1166 m3]; Cost | PP1S503382C0 | PP1XE03382C0 |  |  | PA | C | P1 | S5 | CT | 033 | 82 | SIS | 2 | S | BILL 2 | B02 | S2 | 05 | R00 | ACF03 | 033 |  |  |  |  |  |  |
| PGLS503392C0 |  | PA-GR ; RC work - Slab (Zone 5-2) | 21d | 2012-05-26 | 2012-06-20 | PGLS603391C0, PGLS703391C0, PP1S503382C0 |  |  |  |  | 11.2d | 0d | CONCRETE [18480 h]; CONCRETE [465 m3]; Cost | PGLS503392C0 | PGLXE03392C0 |  |  | PA | C | GL | S5 | CT | 033 | 92 | SIS | 2 | S | BILL 2 | B02 | S2 | 07 | R00 | ACF03 | 033 |  |  |  | PT |  |  |
| PGLS503392C10 |  | PA-GR ; RC work - Close Opening for TC 17 (Zone 5-2) | 21d | 2012-06-20 | 2012-07-15 | PGLS503392C0 |  |  |  |  | 27.2d | 7d | CONCRETE [88 h]; CONCRETE [2 m3]; Cost | PGLS503392C0 | PGLXE03392C0 |  |  | PA | C | GL | S5 | CT | 033 | 92 | SIS | 2 | S | BILL 2 | B02 | S2 | 07 | R00 | ACF03 | 033 |  |  |  | PT | NEW |  |

| ID | WBS | Activity | Duration | Start | Finish | Predecessors | Complete | Remaining | Planned start | Planned finish | Total float | Free float | Resources | change id | IDDD | ACCESS DATES | RENZ % COMPLETE | Claimed This Month | CCAD BUILDING(SET) | CCAD PHASE(SET) | CCAD FLOOR(SET) | CCAD ZONE(SET) | CCAD WORK(SET) | CCAD SECTION(SET) | CCAD SERIAL No.(SET) | CCAD RESPONSIBILITY(SET) | CCAD Carpark code(SET) | CCAD Carpark district code(set) | CCAD CBS(SET) | CCAD BILL(SET) | CCAD HANDOVER(SET) | CCAD TAG(SET) | CCAD REV(SET) | CCADACF (SET) | CCAD SSCF | P_811 | P_711 | CCAD CSA | RENZ CODE | user_text2 | user_text5 |
| --- | --- | --- | --- | --- | --- | --- | --- | --- | --- | --- | --- | --- | --- | --- | --- | --- | --- | --- | --- | --- | --- | --- | --- | --- | --- | --- | --- | --- | --- | --- | --- | --- | --- | --- | --- | --- | --- | --- | --- | --- | --- |
|  | 61 | **CAR PARK ZONE S6-1** |  | 2010-06-13 | 2012-03-21 |  |  |  |  |  |  |  |  |  |  |  |  |  |  |  |  |  |  |  |  |  |  |  |  |  |  |  |  |  |  |  |  |  |  |  |  |
| PFNS603301C0 |  | PA-FN ; Pile Cap & Grade Beam (Zone 6-1) | 25d | 2010-06-13 A | 2011-06-29 A | PFNS503302C0 SS | 100% |  | 2010-08-14 | 2010-09-12 |  |  | ANTI-TERMITE [3424 h]; CONCRETE [33400 h]; CONCRETE [840 m3]; ANTI-TERMITE [2336.57 m2]; THERMAL & MOISTURE [1087.87 m2]; THERMAL & MOISTURE [816 h]; Cost | PFNS603301C0 | PFNXF03301C0 | ACCESS | 95 | 50277.8 | PA | C | FN | S6 | CT | 033 | 01 | SIS | 1 | S | BILL 2 | B02 | S2 | 02 | R00 | ACF02 | 033 |  |  |  |  |  |  |
| PFNS603321C0 |  | PA-FN ; Back filling & Drainage (Zone 6-1) | 14d | 2010-08-01 A | 2011-07-31 A | PFNS603301C0 | 100% |  | 2010-09-13 | 2010-09-28 |  |  | EXCAVATION & BACKFILLING [456 m3]; EXCAVATION & BACKFILLING [688 h]; Cost | PFNS603321C0 | PFNXF03321C0 | ACCESS | 90 |  | PA | C | FN | S6 | CT | 033 | 21 | SIS | 1 | S | BILL 2 | B02 | S2 | 04 | R00 | ACF02 | 033 |  |  |  |  |  |  |
| PP3S603341C0 |  | PA-P3 ; RC work - Wall & Column (Zone 6-1) | 10d | 2011-06-21 A | 2011-08-30 A | PP3S603331C0 | 100% |  | 2011-09-25 | 2011-10-06 |  |  | CONCRETE [25480 h]; CONCRETE [641 m3]; Cost | PP3S603341C0 | PP3XF03341C0 |  |  | 75926.22 | PA | C | P3 | S6 | CT | 033 | 41 | SIS | 1 | S | BILL 2 | B02 | S2 | 05 | R00 | ACF03 | 033 | 100 | 50 |  |  |  |  |
| PP1S603381C0 |  | PA-P1 ; RC work - Wall & Column (Zone 6-1) | 14d | 2011-06-27 A | 2011-11-20 | PP1S603371C0 FF+10d | 30% | 9.8d | 2012-01-05 | 2012-01-22 | 8.2d | 0d | CONCRETE [25480 h]; CONCRETE [641 m3]; Cost | PP1S603381C0 | PP1XF03381C0 |  |  |  | PA | C | P1 | S6 | CT | 033 | 81 | SIS | 1 | S | BILL 2 | B02 | S2 | 05 | R00 | ACF03 | 033 |  |  |  |  |  |  |
| PP3S603331C0 |  | PA-P3 ; SOG Concrete (Zone 6-1) | 14d | 2011-07-10 A | 2011-09-29 A | PFNS603321C0 | 100% |  | 2011-10-02 | 2011-10-18 |  |  | ANTI-TERMITE [1056 h]; CONCRETE [10336 h]; CONCRETE [260 m3]; ANTI-TERMITE [723.23 m2]; THERMAL & MOISTURE [336.72 m2]; THERMAL & MOISTURE [256 h]; Cost | PP3S603331C0 | PP3XF03331C0 | ACCESS |  |  | PA | C | P3 | S6 | CT | 033 | 31 | SIS | 1 | S | BILL 2 | B02 | S2 | 06 | R00 | ACF02 | 033 |  |  |  |  |  |  |
| PP2S603351C0 |  | PA-P2 ; RC work - Slab (Zone 6-1) | 21d | 2011-08-10 A | 2011-09-29 A | PP3S603341C0 | 100% |  | 2012-01-18 | 2012-02-13 |  |  | CONCRETE [10336 h]; CONCRETE [260 m3]; Cost | PP2S603351C0 | PP2XF03351C0 |  |  |  | PA | C | P2 | S6 | CT | 033 | 51 | SIS | 1 | S | BILL 2 | B02 | S2 | 07 | R00 | ACF03 | 033 | 30 | 0 | PT |  |  |  |
| PP2S603361C0 |  | PA-P2 ; RC work - Wall & Column (Zone 6-1) | 14d | 2011-08-23 A | 2011-10-11 | PP2S603351C0 | 30% | 9.8d | 2011-11-22 | 2011-12-11 | 8.2d | 0d | CONCRETE [25480 h]; CONCRETE [641 m3]; Cost | PP2S603361C0 | PP2XF03361C0 |  |  |  | PA | C | P2 | S6 | CT | 033 | 61 | SIS | 1 | S | BILL 2 | B02 | S2 | 05 | R00 | ACF03 | 033 | 30 | 25 |  |  |  |  |
| PP1S603371C0 |  | PA-P1 ; RC work - Slab (Zone 6-1) | 21d | 2011-10-11 | 2011-11-05 | PP2S603361C0 |  |  |  |  | 8.2d | 0d | CONCRETE [10336 h]; CONCRETE [260 m3]; Cost | PP1S603371C0 | PP1XF03371C0 |  |  |  | PA | C | P1 | S6 | CT | 033 | 71 | SIS | 1 | S | BILL 2 | B02 | S2 | 07 | R00 | ACF03 | 033 |  |  | PT |  |  |  |
| PGLS603391C0 |  | PA-GR ; RC work - Slab (Zone 6-1) | 21d | 2011-11-20 | 2011-12-17 | PP1S603381C0 |  |  |  |  | 8.2d | 0d | CONCRETE [10336 h]; CONCRETE [260 m3]; Cost | PGLS603391C0 | PGLXF03391C0 |  |  |  | PA | C | GL | S6 | CT | 033 | 91 | SIS | 1 | S | BILL 2 | B02 | S2 | 07 | R00 | ACF03 | 033 |  |  | PT |  |  |  |
| PGLS603391C10 |  | PA-GR ; RC work - Close Opening for Hoist 08 (Zone 6-1) | 18.5d | 2012-02-29 | 2012-03-21 | BLZHC01588C0, PGLS603391C0 |  |  |  |  | 120d | 108.8d | CONCRETE [88 h]; CONCRETE [2 m3]; Cost | PGLS603391C0 | PGLXF03391C0 |  |  |  | PA | C | GL | S6 | CT | 033 | 91 | SIS | 1 | S | BILL 2 | B02 | S2 | 07 | R00 | ACF03 | 033 |  |  | PT | NEW |  |  |
|  | 62 | **CAR PARK ZONE S6-2** |  | 2010-06-13 | 2011-06-29 |  |  |  |  |  |  |  |  |  |  |  |  |  |  |  |  |  |  |  |  |  |  |  |  |  |  |  |  |  |  |  |  |  |  |  |  |
| PFNS603302C0 |  | PA-FN ; Pile Cap & Grade Beam (Zone 6-2) | 25d | 2010-06-13 A | 2010-12-22 A | PFNS703302C0 | 100% |  | 2011-05-07 | 2011-06-04 |  |  | ANTI-TERMITE [2776 h]; CONCRETE [27040 h]; CONCRETE [680 m3]; ANTI-TERMITE [1891.51 m2]; THERMAL & MOISTURE [880.66 m2]; THERMAL & MOISTURE [664 h]; Cost | PFNS603302C0 | PFNXF03302C0 | ACCESS | 100 |  | PA | C | FN | S6 | CT | 033 | 02 | SIS | 2 | S | BILL 2 | B02 | S2 | 02 | R00 | ACF02 | 033 |  |  |  |  |  |  |
| PFNS603322C0 |  | PA-FN ; Back filling & Drainage (Zone 6-2) | 14d | 2010-09-15 A | 2011-03-01 A | PFNS603302C0 | 100% |  | 2011-06-05 | 2011-06-20 |  |  | EXCAVATION & BACKFILLING [665 m3]; EXCAVATION & BACKFILLING [1000 h]; Cost | PFNS603322C0 | PFNXF03322C0 | ACCESS | 100 |  | PA | C | FN | S6 | CT | 033 | 22 | SIS | 2 | S | BILL 2 | B02 | S2 | 04 | R00 | ACF02 | 033 |  |  |  |  |  |  |
| PP3S603342C0 |  | PA-P3 ; RC work - Wall & Column (Zone 6-2) | 10d | 2011-02-17 A | 2011-06-02 A | PP3S603332C0 | 100% |  | 2011-05-28 | 2011-06-08 |  |  | CONCRETE [20680 h]; CONCRETE [520 m3]; Cost | PP3S603342C0 | PP3XF03342C0 |  | 90 | 24613.09 | PA | C | P3 | S6 | CT | 033 | 42 | SIS | 2 | S | BILL 2 | B02 | S2 | 05 | R00 | ACF03 | 033 |  |  |  |  |  |  |
| PP3S603332C0 |  | PA-P3 ; SOG Concrete (Zone 6-2) | 14d | 2011-03-08 A | 2011-06-01 A | PFNS603322C0 | 100% |  | 2011-03-01 | 2011-03-17 |  |  | ANTI-TERMITE [864 h]; CONCRETE [8472 h]; CONCRETE [213 m3]; ANTI-TERMITE [592.49 m2]; THERMAL & MOISTURE [275.85 m2]; THERMAL & MOISTURE [208 h]; Cost | PP3S603332C0 | PP3XF03332C0 | ACCESS | 90 | 143034.69 | PA | C | P3 | S6 | CT | 033 | 32 | SIS | 2 | S | BILL 2 | B02 | S2 | 06 | R00 | ACF02 | 033 |  |  |  |  |  |  |
| PP2S603352C0 |  | PA-P2 ; RC work - Slab (Zone 6-2) | 21d | 2011-04-17 A | 2011-06-05 A | PP3S603342C0 | 100% |  | 2011-03-26 | 2011-04-19 |  |  | CONCRETE [8472 h]; CONCRETE [213 m3]; Cost | PP2S603352C0 | PP2XF03352C0 |  | 90 | 135461.14 | PA | C | P2 | S6 | CT | 033 | 52 | SIS | 2 | S | BILL 2 | B02 | S2 | 07 | R00 | ACF03 | 033 |  |  | PT |  |  |  |
| PP2S603362C0 |  | PA-P2 ; RC work - Wall & Column (Zone 6-2) | 14d | 2011-05-12 A | 2011-06-06 A | PP2S603352C0 | 100% |  | 2011-06-11 | 2011-06-26 |  |  | CONCRETE [20680 h]; CONCRETE [520 m3]; Cost | PP2S603362C0 | PP2XF03362C0 |  | 90 | 24613.28 | PA | C | P2 | S6 | CT | 033 | 62 | SIS | 2 | S | BILL 2 | B02 | S2 | 05 | R00 | ACF03 | 033 |  |  |  |  |  |  |
| PP1S603372C0 |  | PA-P1 ; RC work - Slab (Zone 6-2) | 20d | 2011-05-15 A | 2011-06-08 A | PP2S603362C0 | 100% |  | 2011-06-27 | 2011-07-20 |  |  | CONCRETE [8472 h]; CONCRETE [213 m3]; Cost | PP1S603372C0 | PP1XF03372C0 |  | 90 | 134931.27 | PA | C | P1 | S6 | CT | 033 | 72 | SIS | 2 | S | BILL 2 | B02 | S2 | 07 | R00 | ACF03 | 033 |  |  | PT |  |  |  |
| PP1S603382C0 |  | PA-P1 ; RC work - Wall & Column (Zone 6-2) | 14d | 2011-05-25 A | 2011-06-16 A | PP1S603372C0 | 100% |  | 2011-07-23 | 2011-08-07 |  |  | CONCRETE [20680 h]; CONCRETE [520 m3]; Cost | PP1S603382C0 | PP1XF03382C0 |  | 5 | 232035.28 | PA | C | P1 | S6 | CT | 033 | 82 | SIS | 2 | S | BILL 2 | B02 | S2 | 05 | R00 | ACF03 | 033 |  |  |  |  |  |  |
| PGLS603392C0 |  | PA-GR ; RC work - Slab (Zone 6-2) | 20d | 2011-06-15 A | 2011-06-29 A | PP1S603382C0 | 100% |  | 2011-06-25 | 2011-07-19 |  |  | CONCRETE [8472 h]; CONCRETE [213 m3]; Cost | PGLS603392C0 | PGLXF03392C0 |  |  | 1510981.51 | PA | C | GL | S6 | CT | 033 | 92 | SIS | 2 | S | BILL 2 | B02 | S2 | 07 | R00 | ACF03 | 033 |  |  | PT |  |  |  |
|  | 63 | **CAR PARK ZONE S6-3** |  |  |  |  |  |  |  |  |  |  |  |  |  |  |  |  |  |  |  |  |  |  |  |  |  |  |  |  |  |  |  |  |  |  |  |  |  |  |  |
|  | 10 | **CAR PARK ZONE S6-3A** |  | 2010-05-25 | 2011-06-28 |  |  |  |  |  |  |  |  |  |  |  |  |  |  |  |  |  |  |  |  |  |  |  |  |  |  |  |  |  |  |  |  |  |  |  |  |
| PFNS103301C100 |  | PA-FN ; Pile Cap & Grade Beam (Zone 6-3A) | 25d | 2010-05-25 A | 2011-01-24 A | MGNMI00101M0 FS+100d | 100% |  | 2011-03-01 | 2011-03-29 |  |  | ANTI-TERMITE [2608 h]; CONCRETE [25440 h]; CONCRETE [639.97 m3]; ANTI-TERMITE [1780.16 m2]; THERMAL & MOISTURE [828.82 m2]; THERMAL & MOISTURE [624 h]; Cost | PFNS103301C0 | PFNXA03301C0 | ACCESS | 100 |  | PA | C | FN | S6 | CT | 033 | 01 | SIS | 3A | N | BILL 2 | B02 | S2 | 02 | R00 | ACF02 | 033 |  |  |  | NEW | FSP |  |
| PFNS103321C100 |  | PA-FN ; Back filling & Drainage (Zone 6-3A) | 14d | 2010-08-20 A | 2011-02-02 A | PFNS103301C100, PFNS103311C100 | 100% |  | 2011-04-16 | 2011-05-01 |  |  | EXCAVATION & BACKFILLING [488.51 m3]; EXCAVATION & BACKFILLING [736 h]; Cost | PFNS103321C0 | PFNXA03321C0 | ACCESS | 100 |  | PA | C | FN | S6 | CT | 033 | 21 | SIS | 3A | N | BILL 2 | B02 | S2 | 04 | R00 | ACF02 | 033 |  |  |  | NEW | FSP |  |
| PP3S103331C100 |  | PA-P3 ; SOG Concrete (Zone 6-3A) | 14d | 2010-10-23 A | 2011-02-09 A | PFNS103321C100 | 100% |  | 2011-05-02 | 2011-05-17 |  |  | ANTI-TERMITE [1960 h]; CONCRETE [19080 h]; CONCRETE [479.97 m3]; ANTI-TERMITE [1335.1 m2]; THERMAL & MOISTURE [621.61 m2]; THERMAL & MOISTURE [472 h]; Cost | PP3S103331C0 | PP3XA03331C0 | ACCESS | 100 |  | PA | C | P3 | S6 | CT | 033 | 31 | SIS | 3A | N | BILL 2 | B02 | S2 | 06 | R00 | ACF02 | 033 |  |  |  | NEW | FSP |  |
| PP3S103341C100 |  | PA-P3 ; RC work - Wall & Column (Zone 6-3A) | 19.88d | 2010-10-28 A | 2011-02-15 A | PP3S103331C100 | 100% |  | 2011-05-18 | 2011-06-09 |  |  | CONCRETE [9544 h]; CONCRETE [239.99 m3]; Cost | PP3S103341C0 | PP3XA03341C0 | ACCESS | 100 |  | PA | C | P3 | S6 | CT | 033 | 41 | SIS | 3A | N | BILL 2 | B02 | S2 | 05 | R00 | ACF03 | 033 |  |  |  | NEW | FSP |  |
| PFNS103311C100 |  | PA-FN ; Duct Bank & MEP Trench (Zone 6-3A) | 20.08d | 2010-12-30 A | 2011-02-10 A | PFNS103301C100 | 100% |  | 2011-04-07 | 2011-05-01 |  |  | CONCRETE [9544 h]; CONCRETE [239.99 m3]; Cost | PFNS403311C0 | PFNXD03311C0 | ACCESS | 100 |  | PA | C | FN | S6 | CT | 033 | 11 | SIS | 3A | N | BILL 2 | B02 | S2 | 09 | R00 | ACF02 | 033 |  |  |  |  | FSP |  |
| PP2S103351C100 |  | PA-P2 ; RC work - Slab (Zone 6-3A) | 19d | 2011-02-01 A | 2011-02-18 A | PP3S103341C100 | 100% |  | 2011-06-11 | 2011-07-03 |  |  | CONCRETE [19728 h]; CONCRETE [496.2 m3]; Cost | PP2S103351C0 | PP2XA03351C0 | ACCESS | 100 |  | PA | C | P2 | S6 | CT | 033 | 51 | SIS | 3A | N | BILL 2 | B02 | S2 | 07 | R00 | ACF03 | 033 |  |  | PT | NEW | FSP |  |
| PP2S103361C100 |  | PA-P2 ; RC work - Wall & Column (Zone 6-3A) | 24d | 2011-02-28 A | 2011-03-28 A | PP2S103351C100 | 100% |  | 2011-02-28 | 2011-03-27 |  |  | CONCRETE [13152 h]; CONCRETE [330.8 m3]; Cost | PP2S103361C0 | PP2XA03361C0 | ACCESS | 100 |  | PA | C | P2 | S6 | CT | 033 | 61 | SIS | 3A | N | BILL 2 | B02 | S2 | 05 | R00 | ACF03 | 033 |  |  |  | NEW | FSP |  |
| PP1S103371C100 |  | PA-P1 ; RC work - Slab (Zone 6-3A) | 18d | 2011-03-28 A | 2011-04-17 A | PP2S103361C100 | 100% |  |  |  |  |  | CONCRETE [18856 h]; CONCRETE [474.32 m3]; Cost | PP1S103371C0 | PP1XA03371C0 |  | 100 |  | PA | C | P1 | S6 | CT | 033 | 71 | SIS | 3A | N | BILL 2 | B02 | S2 | 07 | R00 | ACF03 | 033 |  |  | PT | NEW | FSP |  |
| PP1S103381C100 |  | PA-P1 ; RC work - Wall & Column (Zone 6-3A) | 24d | 2011-04-18 A | 2011-06-08 A | PP1S103371C100 | 100% |  | 2011-04-18 | 2011-05-15 |  |  | CONCRETE [12576 h]; CONCRETE [316.22 m3]; Cost | PP1S103381C0 | PP1XA03381C0 |  | 70 | 43811.2 | PA | C | P1 | S6 | CT | 033 | 81 | SIS | 3A | N | BILL 2 | B02 | S2 | 05 | R00 | ACF03 | 033 |  |  |  | NEW | FSP |  |
| PGLS103391C100 |  | PA-GR ; RC work - Slab (Zone 6-3A) | 20d | 2011-06-08 A | 2011-06-28 A | PP1S103381C100 | 100% |  | 2011-06-08 | 2011-07-03 |  |  | CONCRETE [8512 h]; CONCRETE [214.01 m3]; Cost | PGLS103391C0 | PGLXA03391C0 |  |  | 905129.03 | PA | C | GL | S6 | CT | 033 | 91 | SIS | 3A | N | BILL 2 | B02 | S2 | 07 | R00 | ACF03 | 033 |  |  | PT | NEW | FSP | dismantling TC-10 (FS+0) |

| ID | WBS | Activity | Duration | Start | Finish | Predecessors | Complete | Planned start | Planned finish | Total float | Free float | Resources | user_text2 | user_text4 | change id | IDDD | RENZ CODE | ACCESS DATES | Claimed This Month | CCAD BUILDING(SET) | CCAD PHASE(SET) | CCAD FLOOR(SET) | CCAD ZONE(SET) | CCAD WORK(SET) | CCAD SECTION(SET) | CCAD SERIAL No.(SET) | CCAD RESPONSIBILITY(SET) | CCAD Carpark code(SET) | CCAD Carpark district code(set) | CCAD CBS(SET) | CCAD BILL(SET) | CCAD HANDOVER(SET) | CCAD TAG(SET) | CCAD REV(SET) | CCADACF (SET) | CCAD SSCF | CCAD CSA | RENZ % COMPLETE | P_811 | P_711 |
| --- | --- | --- | --- | --- | --- | --- | --- | --- | --- | --- | --- | --- | --- | --- | --- | --- | --- | --- | --- | --- | --- | --- | --- | --- | --- | --- | --- | --- | --- | --- | --- | --- | --- | --- | --- | --- | --- | --- | --- | --- |
|  | 14 | **CAR PARK ZONE S6-3B** |  | 2011-06-06 | 2012-02-08 |  |  |  |  |  |  |  |  |  |  |  |  |  |  |  |  |  |  |  |  |  |  |  |  |  |  |  |  |  |  |  |  |  |  |  |
| PFNS103301C110 |  | PA-FN ; Pile Cap & Grade Beam (Zone 6-3B) | 2d | 2011-06-06 A | 2011-06-22 A | PGLS103391C100 FS+30d, PGLS103391C120 FS+30d | 100% | 2011-09-10 | 2011-09-12 |  |  | ANTI-TERMITE [760 h]; CONCRETE [7368 h]; CONCRETE [185.29 m3]; ANTI-TERMITE [515.41 m2]; THERMAL & MOISTURE [239.97 m2]; THERMAL & MOISTURE [184 h]; Cost | FSP | 6-3A/7-3A GR slab FS+7d lag | PFNS103301C0 | PFNXA03301C0 | NEW | ACCESS | 257703.33 | PA | C | FN | S6 | CT | 033 | 01 | SIS | 3B | N | BILL 2 | B02 | S2 | 02 | R00 | ACF02 | 033 |  |  |  |  |
| PFNS103321C110 |  | PA-FN ; Back filling & Drainage (Zone 6-3B) | 7d | 2011-06-14 A | 2011-06-23 A | PFNS103301C110 | 100% | 2011-09-12 | 2011-09-20 |  |  | EXCAVATION & BACKFILLING [141.44 m3]; EXCAVATION & BACKFILLING [216 h]; Cost | FSP |  | PFNS103321C0 | PFNXA03321C0 | NEW | ACCESS | 37605.24 | PA | C | FN | S6 | CT | 033 | 21 | SIS | 3B | N | BILL 2 | B02 | S2 | 04 | R00 | ACF02 | 033 |  |  |  |  |
| PP3S103331C110 |  | PA-P3 ; SOG Concrete (Zone 6-3B) | 14d | 2011-11-02 | 2011-11-22 | PFNS103321C110, BLZTC01550C0 |  |  |  | 25.5d | 0d | ANTI-TERMITE [664 h]; CONCRETE [6448 h]; CONCRETE [162.13 m3]; ANTI-TERMITE [450.99 m2]; THERMAL & MOISTURE [209.97 m2]; THERMAL & MOISTURE [160 h]; Cost | FSP |  | PP3S103331C0 | PP3XA03331C0 | NEW | ACCESS |  | PA | C | P3 | S6 | CT | 033 | 31 | SIS | 3B | N | BILL 2 | B02 | S2 | 06 | R00 | ACF02 | 033 |  |  |  |  |
| PP3S103341C110 |  | PA-P3 ; RC work - Wall & Column (Zone 6-3B) | 7d | 2011-11-22 | 2011-12-01 | PP3S103331C110 |  |  |  | 25.5d | 0d | CONCRETE [4608 h]; CONCRETE [115.81 m3]; Cost | FSP |  | PP3S103341C0 | PP3XA03341C0 | NEW |  |  | PA | C | P3 | S6 | CT | 033 | 41 | SIS | 3B | N | BILL 2 | B02 | S2 | 05 | R00 | ACF03 | 033 |  |  |  |  |
| PP2S103351C110 |  | PA-P2 ; RC work - Slab (Zone 6-3B) | 14d | 2011-12-01 | 2011-12-19 | PP3S103341C110 |  |  |  | 25.5d | 0d | CONCRETE [11056 h]; CONCRETE [277.93 m3]; Cost | FSP |  | PP2S103351C0 | PP2XA03351C0 | NEW |  |  | PA | C | P2 | S6 | CT | 033 | 51 | SIS | 3B | N | BILL 2 | B02 | S2 | 07 | R00 | ACF03 | 033 | PT |  |  |  |
| PP2S103361C110 |  | PA-P2 ; RC work - Wall & Column (Zone 6-3B) | 7d | 2011-12-19 | 2011-12-27 | PP2S103351C110 |  |  |  | 25.5d | 0d | CONCRETE [7368 h]; CONCRETE [185.29 m3]; Cost | FSP |  | PP2S103361C0 | PP2XA03361C0 | NEW |  |  | PA | C | P2 | S6 | CT | 033 | 61 | SIS | 3B | N | BILL 2 | B02 | S2 | 05 | R00 | ACF03 | 033 |  |  |  |  |
| PP1S103371C110 |  | PA-P1 ; RC work - Slab (Zone 6-3B) | 13.88d | 2011-12-27 | 2012-01-14 | PP2S103361C110 |  |  |  | 25.5d | 0d | CONCRETE [5464 h]; CONCRETE [137.33 m3]; Cost | FSP |  | PP1S103371C0 | PP1XA03371C0 | NEW |  |  | PA | C | P1 | S6 | CT | 033 | 71 | SIS | 3B | N | BILL 2 | B02 | S2 | 07 | R00 | ACF03 | 033 | PT |  |  |  |
| PGLS103391C110 |  | PA-GR ; RC work - Slab (Zone 6-3B) | 14d | 2012-01-14 | 2012-01-30 | PP1S103381C110 SS |  |  |  | 25.5d | 0d | CONCRETE [6712 h]; CONCRETE [168.73 m3]; Cost | FSP |  | PGLS103391C0 | PGLXA03391C0 | NEW |  |  | PA | C | GL | S6 | CT | 033 | 91 | SIS | 3B | N | BILL 2 | B02 | S2 | 07 | R00 | ACF03 | 033 | PT |  |  |  |
| PP1S103381C110 |  | PA-P1 ; RC work - Wall & Column (Zone 6-3B) | 7d | 2012-01-14 | 2012-01-22 | PP1S103371C110 |  |  |  | 25.5d | 0d | CONCRETE [3640 h]; CONCRETE [91.56 m3]; Cost | FSP |  | PP1S103381C0 | PP1XA03381C0 | NEW |  |  | PA | C | P1 | S6 | CT | 033 | 81 | SIS | 3B | N | BILL 2 | B02 | S2 | 05 | R00 | ACF03 | 033 |  |  |  |  |
| PGLS103391C220 |  | PA-GR ; RC work - Close Opening for TC 10 (Zone 6-3B) | 6.88d | 2012-01-30 | 2012-02-08 | BLZTC01550C0, PGLS103391C110 |  |  |  | 169.75d | 113.12d | CONCRETE [88 h]; CONCRETE [2 m3]; Cost | FSP |  | PGLS103391C0 | PGLXA03391C0 | NEW |  |  | PA | C | GL | S6 | CT | 033 | 91 | SIS | 3B | N | BILL 2 | B02 | S2 | 07 | R00 | ACF03 | 033 | PT |  |  |  |
|  | 71 | **CAR PARK ZONE S7-1** |  | 2010-07-14 | 2012-07-28 |  |  |  |  |  |  |  |  |  |  |  |  |  |  |  |  |  |  |  |  |  |  |  |  |  |  |  |  |  |  |  |  |  |  |  |
| PFNS703301C0 |  | PA-FN ; Pile Cap & Grade Beam (Zone 7-1) | 24.25d | 2010-07-14 A | 2011-07-31 A | PAFOA31200C1 FF, PFNS603302C0, PFNS3209500R02 | 100% | 2011-06-05 | 2011-07-04 |  |  | ANTI-TERMITE [2544 h]; CONCRETE [24808 h]; CONCRETE [624 m3]; ANTI-TERMITE [1735.74 m2]; THERMAL & MOISTURE [808.14 m2]; THERMAL & MOISTURE [616 h]; Cost |  |  | PFNS703301C0 | PFNXG03301C0 |  | ACCESS | 51161.62 | PA | C | FN | S7 | CT | 033 | 01 | SIS | 1 | N | BILL 2 | B02 | S2 | 02 | R00 | ACF02 | 033 |  | 95 |  |  |
| PFNS703321C0 |  | PA-FN ; Back filling & Drainage (Zone 7-1) | 14d | 2010-10-01 A | 2011-06-16 A | PFNS703301C0, PFNS703311C0 | 100% | 2011-07-21 | 2011-08-06 |  |  | EXCAVATION & BACKFILLING [468 m3]; EXCAVATION & BACKFILLING [712 h]; Cost |  |  | PFNS703321C0 | PFNXG03321C0 |  | ACCESS |  | PA | C | FN | S7 | CT | 033 | 21 | SIS | 1 | N | BILL 2 | B02 | S2 | 04 | R00 | ACF02 | 033 |  | 90 |  |  |
| PFNS703311C0 |  | PA-FN ; Duct Bank (Zone 7-1) | 20.12d | 2011-02-24 A | 2011-07-31 A | PFNS703301C0 FF+14d | 100% | 2011-05-05 | 2011-05-29 |  |  | CONCRETE [7752 h]; CONCRETE [195 m3]; Cost |  |  | PFNS703311C0 | PFNXG03311C0 |  | ACCESS | 173615.83 | PA | C | FN | S7 | CT | 033 | 11 | SIS | 1 | N | BILL 2 | B02 | S2 | 09 | R00 | ACF02 | 033 |  | 40 |  |  |
| PP3S703331C0 |  | PA-P3 ; SOG Concrete (Zone 7-1) | 14d | 2011-07-12 A | 2011-08-30 A | PFNS703321C0 | 100% | 2011-10-31 | 2011-11-20 |  |  | ANTI-TERMITE [808 h]; CONCRETE [7840 h]; CONCRETE [197 m3]; ANTI-TERMITE [547.98 m2]; THERMAL & MOISTURE [255.13 m2]; THERMAL & MOISTURE [192 h]; Cost |  |  | PP3S703331C0 | PP3XG03331C0 |  | ACCESS |  | PA | C | P3 | S7 | CT | 033 | 31 | SIS | 1 | N | BILL 2 | B02 | S2 | 06 | R00 | ACF02 | 033 |  |  | 100 | 15 |
| PP2S703351C0 |  | PA-P2 ; RC work - Slab (Zone 7-1) | 21d | 2011-08-10 A | 2011-09-29 A | PP3S703341C0 | 100% | 2012-01-30 | 2012-02-25 |  |  | CONCRETE [7840 h]; CONCRETE [197 m3]; Cost |  |  | PP2S703351C0 | PP2XG03351C0 |  |  |  | PA | C | P2 | S7 | CT | 033 | 51 | SIS | 1 | N | BILL 2 | B02 | S2 | 07 | R00 | ACF03 | 033 | PT |  | 30 | 0 |
| PP3S703341C0 |  | PA-P3 ; RC work - Wall & Column (Zone 7-1) | 10d | 2011-08-10 A | 2011-08-30 A | PP3S703331C0 | 100% | 2012-01-18 | 2012-01-30 |  |  | CONCRETE [18960 h]; CONCRETE [477 m3]; Cost |  |  | PP3S703341C0 | PP3XG03341C0 |  |  | 8652.02 | PA | C | P3 | S7 | CT | 033 | 41 | SIS | 1 | N | BILL 2 | B02 | S2 | 05 | R00 | ACF03 | 033 |  | 60 | 100 | 0 |
| PP2S703361C0 |  | PA-P2 ; RC work - Wall & Column (Zone 7-1) | 10d | 2011-10-01 | 2011-10-11 | PP2S703351C0 |  |  |  | 13d | 0d | CONCRETE [18960 h]; CONCRETE [477 m3]; Cost |  |  | PP2S703361C0 | PP2XG03361C0 |  |  |  | PA | C | P2 | S7 | CT | 033 | 61 | SIS | 1 | N | BILL 2 | B02 | S2 | 05 | R00 | ACF03 | 033 |  | 50 |  |  |
| PP1S703371C0 |  | PA-P1 ; RC work - Slab (Zone 7-1) | 16d | 2011-10-12 | 2011-10-30 | PP2S703361C0 |  |  |  | 13d | 0d | CONCRETE [7840 h]; CONCRETE [197 m3]; Cost |  |  | PP1S703371C0 | PP1XG03371C0 |  |  |  | PA | C | P1 | S7 | CT | 033 | 71 | SIS | 1 | N | BILL 2 | B02 | S2 | 07 | R00 | ACF03 | 033 | PT |  |  |  |
| PP1S703381C0 |  | PA-P1 ; RC work - Wall & Column (Zone 7-1) | 10d | 2011-10-31 | 2011-11-14 | PP1S703371C0 |  |  |  | 13d | 0d | CONCRETE [18960 h]; CONCRETE [477 m3]; Cost |  |  | PP1S703381C0 | PP1XG03381C0 |  |  |  | PA | C | P1 | S7 | CT | 033 | 81 | SIS | 1 | N | BILL 2 | B02 | S2 | 05 | R00 | ACF03 | 033 |  | 60 |  |  |
| PGLS703391C0 |  | PA-GR ; RC work - Slab (Zone 7-1) | 21d | 2011-11-15 | 2011-12-11 | PP1S703381C0 |  |  |  | 13d | 0d | CONCRETE [7840 h]; CONCRETE [197 m3]; Cost |  |  | PGLS703391C0 | PGLXG03391C0 |  |  |  | PA | C | GL | S7 | CT | 033 | 91 | SIS | 1 | N | BILL 2 | B02 | S2 | 07 | R00 | ACF03 | 033 | PT |  |  |  |
| PGLS703391C10 |  | PA-GR ; RC work - Close Opening for TC 5 (Zone 7-1) | 20d | 2012-07-04 | 2012-07-28 | BLZTC01545C0, PGLS703391C0 |  |  |  | 11.2d | 0d | CONCRETE [88 h]; CONCRETE [2 m3]; Cost |  |  | PGLS703391C0 | PGLXG03391C0 | NEW |  |  | PA | C | GL | S7 | CT | 033 | 91 | SIS | 1 | N | BILL 2 | B02 | S2 | 07 | R00 | ACF03 | 033 | PT |  |  |  |
|  | 72 | **CAR PARK ZONE S7-2** |  | 2010-06-13 | 2011-07-31 |  |  |  |  |  |  |  |  |  |  |  |  |  |  |  |  |  |  |  |  |  |  |  |  |  |  |  |  |  |  |  |  |  |  |  |
| PFNS703302C0 |  | PA-FN ; Pile Cap & Grade Beam (Zone 7-2) | 24.88d | 2010-06-13 A | 2010-10-25 A | MGNMI00101M0 FS+150d | 100% | 2011-04-07 | 2011-05-05 |  |  | ANTI-TERMITE [2112 h]; CONCRETE [20632 h]; CONCRETE [519 m3]; ANTI-TERMITE [1443.67 m2]; THERMAL & MOISTURE [672.15 m2]; THERMAL & MOISTURE [504 h]; Cost |  |  | PFNS703302C0 | PFNXG03302C0 |  | ACCESS |  | PA | C | FN | S7 | CT | 033 | 02 | SIS | 2 | N | BILL 2 | B02 | S2 | 02 | R00 | ACF02 | 033 |  | 100 |  |  |
| PFNS703322C0 |  | PA-FN ; Back filling & Drainage (Zone 7-2) | 14d | 2010-09-01 A | 2011-02-17 A | PFNS703302C0 | 100% | 2011-05-07 | 2011-05-22 |  |  | EXCAVATION & BACKFILLING [401 m3]; EXCAVATION & BACKFILLING [600 h]; Cost |  |  | PFNS703322C0 | PFNXG03322C0 |  | ACCESS |  | PA | C | FN | S7 | CT | 033 | 22 | SIS | 2 | N | BILL 2 | B02 | S2 | 04 | R00 | ACF02 | 033 |  | 100 |  |  |
| PP3S703342C0 |  | PA-P3 ; RC work - Wall & Column (Zone 7-2) | 10d | 2011-01-20 A | 2011-04-24 A | PP3S703332C0 | 100% | 2011-05-25 | 2011-06-06 |  |  | CONCRETE [15784 h]; CONCRETE [397 m3]; Cost |  |  | PP3S703342C0 | PP3XG03342C0 |  |  |  | PA | C | P3 | S7 | CT | 033 | 42 | SIS | 2 | N | BILL 2 | B02 | S2 | 05 | R00 | ACF03 | 033 |  | 100 |  |  |
| PP3S703332C0 |  | PA-P3 ; SOG Concrete (Zone 7-2) | 14d | 2011-02-20 A | 2011-03-17 A | PFNS703322C0 | 100% | 2011-06-05 | 2011-06-21 |  |  | ANTI-TERMITE [672 h]; CONCRETE [6600 h]; CONCRETE [166 m3]; ANTI-TERMITE [461.75 m2]; THERMAL & MOISTURE [214.99 m2]; THERMAL & MOISTURE [160 h]; Cost |  |  | PP3S703332C0 | PP3XG03332C0 |  | ACCESS |  | PA | C | P3 | S7 | CT | 033 | 32 | SIS | 2 | N | BILL 2 | B02 | S2 | 06 | R00 | ACF02 | 033 |  | 100 |  |  |
| PP2S703352C0 |  | PA-P2 ; RC work - Slab (Zone 7-2) | 21d | 2011-04-03 A | 2011-06-01 A | PP3S703342C0 | 100% | 2011-03-27 | 2011-04-19 |  |  | CONCRETE [6600 h]; CONCRETE [166 m3]; Cost |  |  | PP2S703352C0 | PP2XG03352C0 |  |  | 40847.16 | PA | C | P2 | S7 | CT | 033 | 52 | SIS | 2 | N | BILL 2 | B02 | S2 | 07 | R00 | ACF03 | 033 | PT | 95 |  |  |
| PP2S703362C0 |  | PA-P2 ; RC work - Wall & Column (Zone 7-2) | 13.88d | 2011-04-05 A | 2011-05-31 A | PP2S703352C0 | 100% | 2011-04-20 | 2011-05-05 |  |  | CONCRETE [15784 h]; CONCRETE [397 m3]; Cost |  |  | PP2S703362C0 | PP2XG03362C0 |  |  |  | PA | C | P2 | S7 | CT | 033 | 62 | SIS | 2 | N | BILL 2 | B02 | S2 | 05 | R00 | ACF03 | 033 |  | 100 |  |  |
| PP1S703382C0 |  | PA-P1 ; RC work - Wall & Column (Zone 7-2) | 14d | 2011-04-12 A | 2011-06-11 A | PP1S703372C0 | 100% | 2011-05-31 | 2011-06-15 |  |  | CONCRETE [15784 h]; CONCRETE [397 m3]; Cost |  |  | PP1S703382C0 | PP1XG03382C0 |  |  | 73347.64 | PA | C | P1 | S7 | CT | 033 | 82 | SIS | 2 | N | BILL 2 | B02 | S2 | 05 | R00 | ACF03 | 033 |  | 50 |  |  |
| PP1S703372C0 |  | PA-P1 ; RC work - Slab (Zone 7-2) | 20d | 2011-05-18 A | 2011-06-02 A | PP2S703362C0 | 100% | 2011-06-09 | 2011-07-04 |  |  | CONCRETE [6600 h]; CONCRETE [166 m3]; Cost |  |  | PP1S703372C0 | PP1XG03372C0 |  |  | 40540.95 | PA | C | P1 | S7 | CT | 033 | 72 | SIS | 2 | N | BILL 2 | B02 | S2 | 07 | R00 | ACF03 | 033 | PT | 95 |  |  |
| PGLS703392C0 |  | PA-GR ; RC work - Slab (Zone 7-2) | 20d | 2011-06-11 A | 2011-07-31 A | PP1S703382C0 | 100% | 2011-06-11 | 2011-07-05 |  |  | CONCRETE [6600 h]; CONCRETE [166 m3]; Cost |  |  | PGLS703392C0 | PGLXG03392C0 |  |  | 934326.73 | PA | C | GL | S7 | CT | 033 | 92 | SIS | 2 | N | BILL 2 | B02 | S2 | 07 | R00 | ACF03 | 033 | PT |  |  |  |

| ID | WBS | Activity | Duration | Start | Finish | Predecessors | Complete | Remaining | Planned start | Planned finish | Total float | Free float | Resources | user_text2 | change id | IDDD | RENZ CODE | ACCESS DATES | RENZ % COMPLETE | CCAD BUILDING(SET) | CCAD PHASE(SET) | CCAD FLOOR(SET) | CCAD ZONE(SET) | CCAD WORK(SET) | CCAD SECTION(SET) | CCAD SERIAL No.(SET) | CCAD RESPONSIBILITY(SET) | CCAD Carpark code(SET) | CCAD Carpark district code(set) | CCAD CBS(SET) | CCAD BILL(SET) | CCAD HANDOVER(SET) | CCAD TAG(SET) | CCAD REV(SET) | CCADACF (SET) | CCAD SSCF | CCAD CSA | Claimed This Month | July2011 Target% Complete | user_text5 | P_811 | P_711 | user_text4 | CARPARK NEW ACTIVITIES_REV03 | CCAD (VO) | user_number8 | user_integer1 | user_integer2 | user_number7 |
| --- | --- | --- | --- | --- | --- | --- | --- | --- | --- | --- | --- | --- | --- | --- | --- | --- | --- | --- | --- | --- | --- | --- | --- | --- | --- | --- | --- | --- | --- | --- | --- | --- | --- | --- | --- | --- | --- | --- | --- | --- | --- | --- | --- | --- | --- | --- | --- | --- | --- |
|  | 73 | **CAR PARK ZONE S7-3** |  |  |  |  |  |  |  |  |  |  |  |  |  |  |  |  |  |  |  |  |  |  |  |  |  |  |  |  |  |  |  |  |  |  |  |  |  |  |  |  |  |  |  |  |  |  |  |
|  | 15 | **CAR PARK ZONE S7-3A** |  | 2010-06-16 | 2011-09-29 |  |  |  |  |  |  |  |  |  |  |  |  |  |  |  |  |  |  |  |  |  |  |  |  |  |  |  |  |  |  |  |  |  |  |  |  |  |  |  |  |  |  |  |  |
| PFNS103301C120 |  | PA-FN ; Pile Cap & Grade Beam (Zone 7-3A) | 25d | 2010-06-16 A | 2010-12-28 A | MGNMI00101M0 FS+100d | 100% |  | 2011-03-01 | 2011-03-29 |  |  | ANTI-TERMITE [3192 h]; CONCRETE [31240 h]; CONCRETE [785.83 m3]; ANTI-TERMITE [2185.89 m2]; THERMAL & MOISTURE [1017.72 m2]; THERMAL & MOISTURE [768 h]; Cost | FSP | PFNS103301C0 | PFNXA03301C0 | NEW | ACCESS | 100 | PA | C | FN | S7 | CT | 033 | 01 | SIS | 3A | N | BILL 2 | B02 | S2 | 02 | R00 | ACF02 | 033 |  |  |  |  |  |  |  |  |  |  |  |  |  |
| PFNS103321C120 |  | PA-FN ; Back filling & Drainage (Zone 7-3A) | 13.88d | 2010-09-01 A | 2011-02-07 A | PFNS103301C120 | 100% |  | 2011-03-30 | 2011-04-14 |  |  | EXCAVATION & BACKFILLING [599.86 m3]; EXCAVATION & BACKFILLING [904 h]; Cost | FSP | PFNS103321C0 | PFNXA03321C0 | NEW | ACCESS | 100 | PA | C | FN | S7 | CT | 033 | 21 | SIS | 3A | N | BILL 2 | B02 | S2 | 04 | R00 | ACF02 | 033 |  |  |  |  |  |  |  |  |  |  |  |  |  |
| PP3S103341C120 |  | PA-P3 ; RC work - Wall & Column (Zone 7-3A) | 20d | 2011-02-13 A | 2011-02-19 A | PP3S103331C120 | 100% |  | 2011-05-02 | 2011-05-24 |  |  | CONCRETE [19528 h]; CONCRETE [491.15 m3]; Cost | FSP | PP3S103341C0 | PP3XA03341C0 | NEW | ACCESS | 100 | PA | C | P3 | S7 | CT | 033 | 41 | SIS | 3A | N | BILL 2 | B02 | S2 | 05 | R00 | ACF03 | 033 |  |  |  |  |  |  |  |  |  |  |  |  |  |
| PP3S103331C120 |  | PA-P3 ; SOG Concrete (Zone 7-3A) | 14d | 2011-02-20 A | 2011-02-28 A | PFNS103321C120 | 100% |  | 2011-03-02 | 2011-03-19 |  |  | ANTI-TERMITE [2800 h]; CONCRETE [27336 h]; CONCRETE [687.6 m3]; ANTI-TERMITE [1912.65 m2]; THERMAL & MOISTURE [890.5 m2]; THERMAL & MOISTURE [672 h]; Cost | FSP | PP3S103331C0 | PP3XA03331C0 | NEW | ACCESS | 100 | PA | C | P3 | S7 | CT | 033 | 31 | SIS | 3A | N | BILL 2 | B02 | S2 | 06 | R00 | ACF02 | 033 |  |  |  |  |  |  |  |  |  |  |  |  |  |
| PP2S103351C120 |  | PA-P2 ; RC work - Slab (Zone 7-3A) | 19.88d | 2011-04-20 A | 2011-05-12 A | PP2S603352C0, PP2S703352C0, PP3S103341C120 | 100% |  |  |  |  |  | CONCRETE [24216 h]; CONCRETE [609.29 m3]; Cost | FSP | PP2S103351C0 | PP2XA03351C0 | NEW | ACCESS | 100 | PA | C | P2 | S7 | CT | 033 | 51 | SIS | 3A | N | BILL 2 | B02 | S2 | 07 | R00 | ACF03 | 033 | PT |  |  |  |  |  |  |  |  |  |  |  |  |
| PP2S103361C120 |  | PA-P2 ; RC work - Wall & Column (Zone 7-3A) | 24d | 2011-05-10 A | 2011-07-31 A | PP2S103351C120 | 100% |  | 2011-06-30 | 2011-07-27 |  |  | CONCRETE [16152 h]; CONCRETE [406.2 m3]; Cost | FSP | PP2S103361C0 | PP2XA03361C0 | NEW |  | 30 | PA | C | P2 | S7 | CT | 033 | 61 | SIS | 3A | N | BILL 2 | B02 | S2 | 05 | R00 | ACF03 | 033 |  | 18049.42 |  |  |  |  |  |  |  |  |  |  |  |
| PP1S103371C120 |  | PA-P1 ; RC work - Slab (Zone 7-3A) | 18d | 2011-07-10 A | 2011-07-31 A | PP1S603372C0, PP1S703372C0, PP2S103361C120 | 100% |  | 2011-07-17 | 2011-08-07 |  |  | CONCRETE [23152 h]; CONCRETE [582.44 m3]; Cost | FSP | PP1S103371C0 | PP1XA03371C0 | NEW |  |  | PA | C | P1 | S7 | CT | 033 | 71 | SIS | 3A | N | BILL 2 | B02 | S2 | 07 | R00 | ACF03 | 033 | PT |  | 100 |  |  |  |  |  |  |  |  |  |  |
| PGLS103391C120 |  | PA-GR ; RC work - Slab (Zone 7-3A) | 20.88d | 2011-08-10 A | 2011-09-29 A | PGLS603392C0, PGLS703392C0, PP1S103381C120 | 100% |  | 2011-08-21 | 2011-09-15 |  |  | CONCRETE [9000 h]; CONCRETE [226.42 m3]; Cost | FSP | PGLS103391C0 | PGLXA03391C0 | NEW |  |  | PA | C | GL | S7 | CT | 033 | 91 | SIS | 3A | N | BILL 2 | B02 | S2 | 07 | R00 | ACF03 | 033 | PT |  |  | dismantling TC-10 (FS+0) | 90 | 0 |  |  |  |  |  |  |  |
| PP1S103381C120 |  | PA-P1 ; RC work - Wall & Column (Zone 7-3A) | 18d | 2011-08-10 A | 2011-08-30 A | PP1S103371C120 | 100% |  | 2011-07-31 | 2011-08-20 |  |  | CONCRETE [15432 h]; CONCRETE [388.29 m3]; Cost | FSP | PP1S103381C0 | PP1XA03381C0 | NEW |  |  | PA | C | P1 | S7 | CT | 033 | 81 | SIS | 3A | N | BILL 2 | B02 | S2 | 05 | R00 | ACF03 | 033 |  |  |  |  | 100 | 0 |  |  |  |  |  |  |  |
|  | 16 | **CAR PARK ZONE S7-3B** |  | 2010-06-16 | 2011-08-30 |  |  |  |  |  |  |  |  |  |  |  |  |  |  |  |  |  |  |  |  |  |  |  |  |  |  |  |  |  |  |  |  |  |  |  |  |  |  |  |  |  |  |  |  |
| PFNS103301C130 |  | PA-FN ; Pile Cap & Grade Beam (Zone 7-3B) | 25d | 2010-06-16 A | 2010-12-28 A | MGNMI00101M0 | 100% |  | 2011-09-03 | 2011-10-01 |  |  | ANTI-TERMITE [2776 h]; CONCRETE [27040 h]; CONCRETE [680.05 m3]; ANTI-TERMITE [1891.65 m2]; THERMAL & MOISTURE [880.73 m2]; THERMAL & MOISTURE [664 h]; Cost | FSP | PFNS103301C0 | PFNXA03301C0 | NEW | ACCESS | 100 | PA | C | FN | S7 | CT | 033 | 01 | SIS | 3B | N | BILL 2 | B02 | S2 | 02 | R00 | ACF02 | 033 |  |  |  |  |  |  |  |  |  |  |  |  |  |
| PFNS103321C130 |  | PA-FN ; Back filling & Drainage (Zone 7-3B) | 14d | 2010-09-01 A | 2011-06-06 A | PFNS103301C130 | 100% |  | 2011-10-02 | 2011-10-17 |  |  | EXCAVATION & BACKFILLING [519.11 m3]; EXCAVATION & BACKFILLING [784 h]; Cost | FSP | PFNS103321C0 | PFNXA03321C0 | NEW | ACCESS | 80 | PA | C | FN | S7 | CT | 033 | 21 | SIS | 3B | N | BILL 2 | B02 | S2 | 04 | R00 | ACF02 | 033 |  |  |  |  |  |  |  |  |  |  |  |  |  |
| PP3S103341C130 |  | PA-P3 ; RC work - Wall & Column (Zone 7-3B) | 14d | 2011-06-08 A | 2011-06-15 A | PP3S103331C130 | 100% |  | 2011-09-18 | 2011-10-04 |  |  | CONCRETE [16896 h]; CONCRETE [425.03 m3]; Cost | FSP | PP3S103341C0 | PP3XA03341C0 | NEW |  |  | PA | C | P3 | S7 | CT | 033 | 41 | SIS | 3B | N | BILL 2 | B02 | S2 | 05 | R00 | ACF03 | 033 |  |  |  |  |  |  |  |  |  |  |  |  |  |
| PP2S103351C130 |  | PA-P2 ; RC work - Slab (Zone 7-3B) | 21d | 2011-06-13 A | 2011-06-29 A | PP3S103341C130 | 100% |  | 2011-10-11 | 2011-11-05 |  |  | CONCRETE [20968 h]; CONCRETE [527.28 m3]; Cost | FSP | PP2S103351C0 | PP2XA03351C0 | NEW |  |  | PA | C | P2 | S7 | CT | 033 | 51 | SIS | 3B | N | BILL 2 | B02 | S2 | 07 | R00 | ACF03 | 033 | PT |  |  |  |  |  |  |  |  |  |  |  |  |
| PP3S103331C130 |  | PA-P3 ; SOG Concrete (Zone 7-3B) | 14d | 2011-06-15 A | 2011-06-20 A | PFNS103321C130 | 100% |  | 2011-08-14 | 2011-09-01 |  |  | ANTI-TERMITE [2424 h]; CONCRETE [23656 h]; CONCRETE [595.04 m3]; ANTI-TERMITE [1655.18 m2]; THERMAL & MOISTURE [770.63 m2]; THERMAL & MOISTURE [576 h]; Cost | FSP | PP3S103331C0 | PP3XA03331C0 | NEW | ACCESS |  | PA | C | P3 | S7 | CT | 033 | 31 | SIS | 3B | N | BILL 2 | B02 | S2 | 06 | R00 | ACF02 | 033 |  | 457432.1 |  |  |  |  |  |  |  |  |  |  |  |
| PP1S103371C130 |  | PA-P1 ; RC work - Slab (Zone 7-3B) | 21d | 2011-07-10 A | 2011-07-31 A | PP2S103361C130 | 100% |  | 2011-11-28 | 2011-12-24 |  |  | CONCRETE [19344 h]; CONCRETE [486.49 m3]; Cost | FSP | PP1S103371C0 | PP1XA03371C0 | NEW |  |  | PA | C | P1 | S7 | CT | 033 | 71 | SIS | 3B | N | BILL 2 | B02 | S2 | 07 | R00 | ACF03 | 033 | PT |  |  |  |  |  |  |  |  |  |  |  |  |
| PP2S103361C130 |  | PA-P2 ; RC work - Wall & Column (Zone 7-3B) | 14d | 2011-07-10 A | 2011-07-31 A | PP2S103351C130 | 100% |  | 2011-10-18 | 2011-11-03 |  |  | CONCRETE [13968 h]; CONCRETE [351.51 m3]; Cost | FSP | PP2S103361C0 | PP2XA03361C0 | NEW |  |  | PA | C | P2 | S7 | CT | 033 | 61 | SIS | 3B | N | BILL 2 | B02 | S2 | 05 | R00 | ACF03 | 033 |  |  |  |  |  |  |  |  |  |  |  |  |  |
| PGLS103391C130 |  | PA-GR ; RC work - Slab (Zone 7-3B) | 21d | 2011-08-10 A | 2011-08-30 A | PGLS103331C250 FF, PP1S103381C130 | 100% |  | 2011-08-16 | 2011-09-11 |  |  | CONCRETE [7344 h]; CONCRETE [184.79 m3]; Cost | FSP | PGLS103391C0 | PGLXA03391C0 | NEW |  |  | PA | C | GL | S7 | CT | 033 | 91 | SIS | 3B | N | BILL 2 | B02 | S2 | 07 | R00 | ACF03 | 033 | PT |  |  | dismantling TC-10 (FS+0) | 100 | 0 |  |  |  |  |  |  |  |
| PP1S103381C130 |  | PA-P1 ; RC work - Wall & Column (Zone 7-3B) | 14d | 2011-08-10 A | 2011-08-30 A | PP1S103371C130 | 100% |  | 2011-07-31 | 2011-08-15 |  |  | CONCRETE [12888 h]; CONCRETE [324.34 m3]; Cost | FSP | PP1S103381C0 | PP1XA03381C0 | NEW |  |  | PA | C | P1 | S7 | CT | 033 | 81 | SIS | 3B | N | BILL 2 | B02 | S2 | 05 | R00 | ACF03 | 033 |  |  |  |  | 100 | 0 |  |  |  |  |  |  |  |
|  | 74 | **CAR PARK ZONE S7-4** |  |  |  |  |  |  |  |  |  |  |  |  |  |  |  |  |  |  |  |  |  |  |  |  |  |  |  |  |  |  |  |  |  |  |  |  |  |  |  |  |  |  |  |  |  |  |  |
|  | 29 | **CAR PARK ZONE S7-4A** |  | 2010-06-23 | 2011-12-14 |  |  |  |  |  |  |  |  |  |  |  |  |  |  |  |  |  |  |  |  |  |  |  |  |  |  |  |  |  |  |  |  |  |  |  |  |  |  |  |  |  |  |  |  |
| PFNS703304R02 |  | PA-FN ; Pile Cap & Grade Beam (Zone 7-4A) | 24d | 2010-06-23 A | 2011-04-26 A | PAFOA31200C1 FF | 100% |  | 2011-06-05 | 2011-07-03 |  |  | ANTI-TERMITE [1576 h]; CONCRETE [15376 h]; CONCRETE [386.63 m3]; ANTI-TERMITE [1075.47 m2]; THERMAL & MOISTURE [500.72 m2]; THERMAL & MOISTURE [376 h]; Cost | FSP | PFNS703304C0 | PFNXG03304C0 |  | ACCESS | 100 | PA | C | FN | S7 | CT | 033 | 04 | SIS | 4A | N | BILL 2 | B02 | S1 | 02 | R00 | ACF02 | 033 |  |  |  |  |  |  | Additional work for Existing pile, EI01,04,06 (FF) | REV03 | CP |  |  |  |  |
| PFNS703324R02 |  | PA-FN ; Back filling & Drainage (Zone 7-4A) | 14d | 2010-09-01 A | 2011-09-29 A | PFNS703304R02, PGLS103391C130 | 100% |  | 2011-07-05 | 2011-07-20 |  |  | EXCAVATION & BACKFILLING [295.13 m3]; EXCAVATION & BACKFILLING [448 h]; Cost | FSP | PFNS703324C0 | PFNXG03324C0 |  | ACCESS | 80 | PA | C | FN | S7 | CT | 033 | 24 | SIS | 4A | N | BILL 2 | B02 | S1 | 04 | R00 | ACF02 | 033 |  |  |  |  |  |  |  | REV03 | CP |  |  |  |  |
| PP2S703354R02 |  | PA-P2 ; RC work - Slab (Zone 7-4A) | 15d | 2011-09-05 A | 2011-10-19 | PP3S703344R02 | 10% | 13.5d | 2011-10-03 | 2011-10-20 | 25.98d | 0d | CONCRETE [11920 h]; CONCRETE [299.78 m3]; Cost | FSP | PP2S703354C0 | PP2XG03354C0 |  |  |  | PA | C | P2 | S7 | CT | 033 | 54 | SIS | 4A | N | BILL 2 | B02 | S1 | 07 | R00 | ACF03 | 033 |  |  |  |  |  |  |  | REV03 | CP | 0 | 0 | 0 | 0 |
| PP2S703364R02 |  | PA-P2 ; RC work - Wall & Column (Zone 7-4A) | 7d | 2011-09-05 A | 2011-10-26 | PP2S703354R02 | 23% | 5.42d | 2011-10-20 | 2011-10-29 | 25.98d | 0d | CONCRETE [7944 h]; CONCRETE [199.85 m3]; Cost | FSP | PP2S703364C0 | PP2XG03364C0 |  |  | 50 | PA | C | P2 | S7 | CT | 033 | 64 | SIS | 4A | N | BILL 2 | B02 | S1 | 05 | R00 | ACF03 | 033 |  |  |  |  |  |  |  | REV03 | CP |  |  |  |  |
| PP3S703334R02 |  | PA-P3 ; SOG Concrete (Zone 7-4A) | 14d | 2011-09-05 A | 2011-09-29 A | PFNS703324R02 | 100% |  | 2011-09-08 | 2011-09-25 |  |  | ANTI-TERMITE [1384 h]; CONCRETE [13456 h]; CONCRETE [338.3 m3]; ANTI-TERMITE [941.03 m2]; THERMAL & MOISTURE [438.13 m2]; THERMAL & MOISTURE [328 h]; Cost | FSP | PP3S703334C0 | PP3XG03334C0 |  | ACCESS |  | PA | C | P3 | S7 | CT | 033 | 34 | SIS | 4A | N | BILL 2 | B02 | S1 | 06 | R00 | ACF02 | 033 |  |  |  |  |  |  |  | REV03 | CP |  |  |  |  |
| PP3S703344R02 |  | PA-P3 ; RC work - Wall & Column (Zone 7-4A) | 7d | 2011-09-05 A | 2011-09-29 A | PP3S703334R02 | 100% |  | 2011-09-25 | 2011-10-03 |  |  | CONCRETE [9600 h]; CONCRETE [241.65 m3]; Cost | FSP | PP3S703344C0 | PP3XG03344C0 |  |  | 40 | PA | C | P3 | S7 | CT | 033 | 44 | SIS | 4A | N | BILL 2 | B02 | S1 | 05 | R00 | ACF03 | 033 |  | 19000.1 |  |  |  |  |  | REV03 | CP |  |  |  |  |
| PP1S703374R02 |  | PA-P1 ; RC work - Slab (Zone 7-4A) | 15d | 2011-10-26 | 2011-11-16 | PP2S703364R02 |  |  |  |  | 25.98d | 0d | CONCRETE [10944 h]; CONCRETE [275.35 m3]; Cost | FSP | PP1S703374C0 | PP1XG03374C0 |  |  |  | PA | C | P1 | S7 | CT | 033 | 74 | SIS | 4A | N | BILL 2 | B02 | S1 | 07 | R00 | ACF03 | 033 |  |  |  |  |  |  |  | REV03 | CP |  |  |  |  |
| PP1S703384R02 |  | PA-P1 ; RC work - Wall & Column (Zone 7-4A) | 7.12d | 2011-11-16 | 2011-11-24 | PP1S703374R02 |  |  |  |  | 25.98d | 0d | CONCRETE [7296 h]; CONCRETE [183.57 m3]; Cost | FSP | PP1S703384C0 | PP1XG03384C0 |  |  | 50 | PA | C | P1 | S7 | CT | 033 | 84 | SIS | 4A | N | BILL 2 | B02 | S1 | 05 | R00 | ACF03 | 033 |  |  |  |  |  |  |  | REV03 | CP |  |  |  |  |
| PGLS703394R02 |  | PA-GR ; RC work - Slab (Zone 7-4A) | 14.88d | 2011-11-24 | 2011-12-14 | PGLS103331C250 FF, PP1S703384R02 |  |  |  |  | 25.98d | 0d | CONCRETE [5536 h]; CONCRETE [139.03 m3]; Cost | FSP | PGLS703394C0 | PGLXG03394C0 |  |  |  | PA | C | GL | S7 | CT | 033 | 94 | SIS | 4A | N | BILL 2 | B02 | S1 | 07 | R00 | ACF03 | 033 |  |  |  | dismantling TC-12(FS+0) & PT-09 Ceiling brackets(FS+36) |  |  |  | REV03 | CP |  |  |  |  |

| ID | WBS | Activity | Duration | Start | Finish | Predecessors | Complete | Remaining | Planned start | Planned finish | Total float | Free float | Resources | user_text2 | user_text4 | change id | IDDD | ACCESS DATES | RENZ % COMPLETE | CARPARK NEW ACTIVITIES_REV03 | CCAD BUILDING(SET) | CCAD PHASE(SET) | CCAD FLOOR(SET) | CCAD ZONE(SET) | CCAD WORK(SET) | CCAD SECTION(SET) | CCAD SERIAL No.(SET) | CCAD RESPONSIBILITY(SET) | CCAD Carpark code(SET) | CCAD Carpark district code(set) | CCAD CBS(SET) | CCAD BILL(SET) | CCAD HANDOVER(SET) | CCAD TAG(SET) | CCAD REV(SET) | CCAD (VO) | CCADACF (SET) | CCAD SSCF | Claimed This Month | CCAD CSA | user_text5 | RENZ CODE |
| --- | --- | --- | --- | --- | --- | --- | --- | --- | --- | --- | --- | --- | --- | --- | --- | --- | --- | --- | --- | --- | --- | --- | --- | --- | --- | --- | --- | --- | --- | --- | --- | --- | --- | --- | --- | --- | --- | --- | --- | --- | --- | --- |
|  | 30 | **CAR PARK ZONE S7-4B** |  | 2010-06-23 | 2012-06-21 |  |  |  |  |  |  |  |  |  |  |  |  |  |  |  |  |  |  |  |  |  |  |  |  |  |  |  |  |  |  |  |  |  |  |  |  |  |
| PFNS703304C0 |  | PA-FN ; Pile Cap & Grade Beam (Zone 7-4B) | 24d | 2010-06-23 A | 2011-04-26 A | PAFOA31200C1 FF | 100% |  | 2011-06-05 | 2011-07-03 |  |  | ANTI-TERMITE [1776 h]; CONCRETE [17328 h]; CONCRETE [435.99 m3]; ANTI-TERMITE [1212.76 m2]; THERMAL & MOISTURE [564.64 m2]; THERMAL & MOISTURE [424 h]; Cost | FSP | Additional work for Existing pile, EI01,04,06 (FF) | PFNS703304C0 | PFNXG03304C0 | ACCESS | 100 | REV03 | PA | C | FN | S7 | CT | 033 | 04 | SIS | 4B | N | BILL 2 | B02 | S1 | 02 | R00 | CP | ACF02 | 033 |  |  |  |  |
| PFNS703324C0 |  | PA-FN ; Back filling & Drainage (Zone 7-4B) | 14d | 2010-09-01 A | 2011-09-29 A | PFNS703304C0, PGLS703394R02 FS+15d | 100% |  | 2011-07-05 | 2011-07-20 |  |  | EXCAVATION & BACKFILLING [332.81 m3]; EXCAVATION & BACKFILLING [504 h]; Cost | FSP |  | PFNS703324C0 | PFNXG03324C0 | ACCESS | 80 | REV03 | PA | C | FN | S7 | CT | 033 | 24 | SIS | 4B | N | BILL 2 | B02 | S1 | 04 | R00 | CP | ACF02 | 033 |  |  |  |  |
| PP3S703334C0 |  | PA-P3 ; SOG Concrete (Zone 7-4B) | 14d | 2011-09-05 A | 2012-01-17 | PFNS703324C0 | 10% | 12.6d | 2012-01-07 | 2012-01-23 | 25.98d | 0d | ANTI-TERMITE [1552 h]; CONCRETE [15168 h]; CONCRETE [381.49 m3]; ANTI-TERMITE [1061.16 m2]; THERMAL & MOISTURE [494.06 m2]; THERMAL & MOISTURE [376 h]; Cost | FSP |  | PP3S703334C0 | PP3XG03334C0 | ACCESS |  | REV03 | PA | C | P3 | S7 | CT | 033 | 34 | SIS | 4B | N | BILL 2 | B02 | S1 | 06 | R00 | CP | ACF02 | 033 |  |  |  |  |
| PP3S703344C0 |  | PA-P3 ; RC work - Wall & Column (Zone 7-4B) | 7d | 2012-01-17 | 2012-01-25 | PP3S703334C0 |  |  |  |  | 84.98d | 0d | CONCRETE [10840 h]; CONCRETE [272.5 m3]; Cost | FSP |  | PP3S703344C0 | PP3XG03344C0 |  | 40 | REV03 | PA | C | P3 | S7 | CT | 033 | 44 | SIS | 4B | N | BILL 2 | B02 | S1 | 05 | R00 | CP | ACF03 | 033 | 19000.1 |  |  |  |
| PP2S703354C0 |  | PA-P2 ; RC work - Slab (Zone 7-4B) | 15d | 2012-01-25 | 2012-02-13 | PP3S703344C0 |  |  |  |  | 84.98d | 0d | CONCRETE [13440 h]; CONCRETE [338.04 m3]; Cost | FSP |  | PP2S703354C0 | PP2XG03354C0 |  |  | REV03 | PA | C | P2 | S7 | CT | 033 | 54 | SIS | 4B | N | BILL 2 | B02 | S1 | 07 | R00 | CP | ACF03 | 033 |  | PT |  |  |
| PP2S703364C0 |  | PA-P2 ; RC work - Wall & Column (Zone 7-4B) | 7d | 2012-02-13 | 2012-02-21 | PP2S703354C0 |  |  |  |  | 84.98d | 0d | CONCRETE [8968 h]; CONCRETE [225.37 m3]; Cost | FSP |  | PP2S703364C0 | PP2XG03364C0 |  | 50 | REV03 | PA | C | P2 | S7 | CT | 033 | 64 | SIS | 4B | N | BILL 2 | B02 | S1 | 05 | R00 | CP | ACF03 | 033 |  |  |  |  |
| PP1S703374C0 |  | PA-P1 ; RC work - Slab (Zone 7-4B) | 15d | 2012-02-21 | 2012-03-10 | PP2S703364C0 |  |  |  |  | 84.98d | 0d | CONCRETE [12352 h]; CONCRETE [310.5 m3]; Cost | FSP |  | PP1S703374C0 | PP1XG03374C0 |  |  | REV03 | PA | C | P1 | S7 | CT | 033 | 74 | SIS | 4B | N | BILL 2 | B02 | S1 | 07 | R00 | CP | ACF03 | 033 |  | PT |  |  |
| PP1S703384C0 |  | PA-P1 ; RC work - Wall & Column (Zone 7-4B) | 7d | 2012-03-10 | 2012-03-18 | PP1S703374C0 |  |  |  |  | 84.98d | 0d | CONCRETE [8232 h]; CONCRETE [207 m3]; Cost | FSP |  | PP1S703384C0 | PP1XG03384C0 |  | 50 | REV03 | PA | C | P1 | S7 | CT | 033 | 84 | SIS | 4B | N | BILL 2 | B02 | S1 | 05 | R00 | CP | ACF03 | 033 |  |  |  |  |
| PGLS703394C0 |  | PA-GR ; RC work - Slab (Zone 7-4B) | 15d | 2012-03-18 | 2012-04-04 | PGLS103331C250 FF, PP1S703384C0 |  |  |  |  | 84.98d | 10.38d | CONCRETE [6232 h]; CONCRETE [156.78 m3]; Cost | FSP |  | PGLS703394C0 | PGLXG03394C0 |  |  | REV03 | PA | C | GL | S7 | CT | 033 | 94 | SIS | 4B | N | BILL 2 | B02 | S1 | 07 | R00 | CP | ACF03 | 033 |  | PT |  |  |
| PGLS703394C20 |  | PA-GR ; RC work - Close Opening for Hoist 05 (Zone 7-4B) | 21d | 2012-04-16 | 2012-05-10 | BLZHC01585C0, PGLS703394C0 |  |  |  |  | 158.72d | 100.36d | CONCRETE [88 h]; CONCRETE [2 m3]; Cost | FSP |  | PGLS703394C0 | PGLXG03394C0 |  |  | REV03 | PA | C | GL | S7 | CT | 033 | 94 | SIS | 4B | N | BILL 2 | B02 | S1 | 07 | R00 | CP | ACF03 | 033 |  | PT | PA-P1,1st Fix of PB-1,PB-2,PB-3 | NEW |
| PGLS703394C10 |  | PA-GR ; RC work - Close Opening for Hoist 02 (Zone 7-4B) | 19.38d | 2012-05-28 | 2012-06-21 | BLZHC01582C0, PGLS703394C0 |  |  |  |  | 124d | 65.64d | CONCRETE [88 h]; CONCRETE [2 m3]; Cost | FSP |  | PGLS703394C0 | PGLXG03394C0 |  |  | REV03 | PA | C | GL | S7 | CT | 033 | 94 | SIS | 4B | N | BILL 2 | B02 | S1 | 07 | R00 | CP | ACF03 | 033 |  | PT | PA-P1,1st Fix of PB-1,PB-2,PB-3 | NEW |
|  | 17 | **CAR PARK ZONE S8-A** |  | 2010-06-23 | 2012-08-15 |  |  |  |  |  |  |  |  |  |  |  |  |  |  |  |  |  |  |  |  |  |  |  |  |  |  |  |  |  |  |  |  |  |  |  |  |  |
| PFNS103301C140 |  | PA-FN ; Pile Cap & Grade Beam (Zone 8-A) | 24.88d | 2010-06-23 A | 2010-09-01 A | T09CO05115C0 | 100% |  | 2011-08-02 | 2011-09-01 |  |  | ANTI-TERMITE [2296 h]; CONCRETE [22432 h]; CONCRETE [564.07 m3]; ANTI-TERMITE [1569.04 m2]; THERMAL & MOISTURE [730.52 m2]; THERMAL & MOISTURE [552 h]; Cost | FSP | PT-09, Erection of temporay truss (FS+0) | PFNS103301C0 | PFNXA03301C0 | ACCESS | 100 |  | PA | C | FN | S8 | CT | 033 | 01 | SIS | A | N | BILL 2 | B02 | S2 | 02 | R00 |  | ACF02 | 033 |  |  |  | NEW |
| PFNS103321C140 |  | PA-FN ; Back filling & Drainage (Zone 8-A) | 15d | 2010-09-01 A | 2012-04-21 | PFNS103301C140, BLZHC01585C0, BLZHC01589C0 | 72% | 4.2d | 2012-06-14 | 2012-07-02 | 19.24d | 0d | EXCAVATION & BACKFILLING [430.58 m3]; EXCAVATION & BACKFILLING [648 h]; Cost | FSP |  | PFNS103321C0 | PFNXA03321C0 | ACCESS | 70 |  | PA | C | FN | S8 | CT | 033 | 21 | SIS | A | N | BILL 2 | B02 | S2 | 04 | R00 |  | ACF02 | 033 |  |  |  | NEW |
| PP3S103331C140 |  | PA-P3 ; SOG Concrete (Zone 8-A) | 9.88d | 2011-07-06 A | 2012-04-26 | PFNS103321C140 | 50% | 4.94d | 2012-05-21 | 2012-05-31 | 19.24d | 0d | ANTI-TERMITE [2008 h]; CONCRETE [19624 h]; CONCRETE [493.57 m3]; ANTI-TERMITE [1372.93 m2]; THERMAL & MOISTURE [639.21 m2]; THERMAL & MOISTURE [480 h]; Cost | FSP |  | PP3S103331C0 | PP3XA03331C0 | ACCESS |  |  | PA | C | P3 | S8 | CT | 033 | 31 | SIS | A | N | BILL 2 | B02 | S2 | 06 | R00 |  | ACF02 | 033 |  |  |  | NEW |
| PP3S103341C140 |  | PA-P3 ; RC work - Wall & Column (Zone 8-A) | 7d | 2011-07-14 A | 2012-05-03 | PP3S103331C140 | 20% | 5.6d | 2011-08-21 | 2011-08-29 | 19.24d | 0d | CONCRETE [14016 h]; CONCRETE [352.55 m3]; Cost | FSP |  | PP3S103341C0 | PP3XA03341C0 |  | 70 |  | PA | C | P3 | S8 | CT | 033 | 41 | SIS | A | N | BILL 2 | B02 | S2 | 05 | R00 |  | ACF03 | 033 | 25493.26 |  |  | NEW |
| PP2S103351C140 |  | PA-P2 ; RC work - Slab (Zone 8-A) | 15d | 2012-05-03 | 2012-05-21 | PP3S103341C140 |  |  |  |  | 19.24d | 0d | CONCRETE [17392 h]; CONCRETE [437.35 m3]; Cost | FSP |  | PP2S103351C0 | PP2XA03351C0 |  |  |  | PA | C | P2 | S8 | CT | 033 | 51 | SIS | A | N | BILL 2 | B02 | S2 | 07 | R00 |  | ACF03 | 033 |  | PT |  | NEW |
| PP2S103361C140 |  | PA-P2 ; RC work - Wall & Column (Zone 8-A) | 6.88d | 2012-05-21 | 2012-05-29 | PP2S103351C140 |  |  |  |  | 19.24d | 0d | CONCRETE [11592 h]; CONCRETE [291.58 m3]; Cost | FSP |  | PP2S103361C0 | PP2XA03361C0 |  | 50 |  | PA | C | P2 | S8 | CT | 033 | 61 | SIS | A | N | BILL 2 | B02 | S2 | 05 | R00 |  | ACF03 | 033 | 6373.15 |  |  | NEW |
| PP1S103371C140 |  | PA-P1 ; RC work - Slab (Zone 8-A) | 13.5d | 2012-05-29 | 2012-06-13 | CAFOA03300C1 FF, PP2S103361C140, PP2S103361C150 |  |  |  |  | 19.24d | 0d | CONCRETE [24120 h]; CONCRETE [606.79 m3]; Cost | FSP |  | PP1S103371C0 | PP1XA03371C0 |  |  |  | PA | C | P1 | S8 | CT | 033 | 71 | SIS | A | N | BILL 2 | B02 | S2 | 07 | R00 |  | ACF03 | 033 |  | PT |  | NEW |
| PP1S103381C140 |  | PA-P1 ; RC work - Wall & Column (Zone 8-A) | 5.25d | 2012-06-13 | 2012-06-20 | PP1S103371C140 |  |  |  |  | 19.24d | 0d | CONCRETE [16080 h]; CONCRETE [404.52 m3]; Cost | FSP |  | PP1S103381C0 | PP1XA03381C0 |  | 50 |  | PA | C | P1 | S8 | CT | 033 | 81 | SIS | A | N | BILL 2 | B02 | S2 | 05 | R00 |  | ACF03 | 033 | 46675.7 |  |  | NEW |
| PGLS103391C140 |  | PA-GR ; RC work - Slab (Zone 8-A) | 12.75d | 2012-06-20 | 2012-07-05 | PP1S103381C140 |  |  |  |  | 19.24d | 0d | CONCRETE [7128 h]; CONCRETE [179.19 m3]; Cost | FSP |  | PGLS103391C0 | PGLXA03391C0 |  |  |  | PA | C | GL | S8 | CT | 033 | 91 | SIS | A | N | BILL 2 | B02 | S2 | 07 | R00 |  | ACF03 | 033 |  | PT |  | NEW |
| PGLS103391C230 |  | PA-GR ; RC work - Close Opening for Hoist 09 (Zone 8-A) | 20.88d | 2012-07-05 | 2012-07-30 | BLZHC01589C0, PGLS103391C140 |  |  |  |  | 90.74d | 32.38d | CONCRETE [88 h]; CONCRETE [2 m3]; Cost | FSP |  | PGLS103391C0 | PGLXA03391C0 |  |  |  | PA | C | GL | S8 | CT | 033 | 91 | SIS | A | N | BILL 2 | B02 | S2 | 07 | R00 |  | ACF03 | 033 |  | PT | PA-P1,1st Fix of PB-1,PB-2,PB-3 | NEW |
| PGLS103391C240 |  | PA-GR ; RC work - Close Opening for Hoist 05 (Zone 8-A) | 20.88d | 2012-07-05 | 2012-07-30 | BLZHC01585C0, PGLS103391C140 |  |  |  |  | 90.74d | 32.38d | CONCRETE [88 h]; CONCRETE [2 m3]; Cost | FSP |  | PGLS103391C0 | PGLXA03391C0 |  |  |  | PA | C | GL | S8 | CT | 033 | 91 | SIS | A | N | BILL 2 | B02 | S2 | 07 | R00 |  | ACF03 | 033 |  | PT | PA-P1,1st Fix of PB-1,PB-2,PB-3 | NEW |
| PGLS103371C250 |  | PA-GR ; RC work - Close Opening for TC 03 (Zone 8-A) | 22.32d | 2012-07-19 | 2012-08-15 | BLZTC01543C0, PGLS103391C140 |  |  |  |  | 77.1d | 18.74d | CONCRETE; Cost | FSP |  | PP1S103371C0 | PP1XA03371C0 |  |  |  | PA | C | GL | S8 | CT | 033 | 71 | SIS | A | N | BILL 2 | B02 | S2 | 07 | R00 |  | ACF03 | 033 |  |  | PA-P1,1st Fix of PB-1,PB-2,PB-3 | NEW |

| ID | WBS | Activity | Duration | Start | Finish | Predecessors | Complete | Remaining | Planned start | Planned finish | Total float | Free float | Resources | user_text2 | change id | IDDD | RENZ CODE | ACCESS DATES | RENZ % COMPLETE | Claimed This Month | CCAD BUILDING(SET) | CCAD PHASE(SET) | CCAD FLOOR(SET) | CCAD ZONE(SET) | CCAD WORK(SET) | CCAD SECTION(SET) | CCAD SERIAL No.(SET) | CCAD RESPONSIBILITY(SET) | CCAD Carpark code(SET) | CCAD Carpark district code(set) | CCAD CBS(SET) | CCAD BILL(SET) | CCAD HANDOVER(SET) | CCAD TAG(SET) | CCAD REV(SET) | CCADACF (SET) | CCAD SSCF | July2011 Target% Complete | CCAD CSA | P_811 | P_711 | CCAD (VO) |
| --- | --- | --- | --- | --- | --- | --- | --- | --- | --- | --- | --- | --- | --- | --- | --- | --- | --- | --- | --- | --- | --- | --- | --- | --- | --- | --- | --- | --- | --- | --- | --- | --- | --- | --- | --- | --- | --- | --- | --- | --- | --- | --- |
|  | 18 | **CAR PARK ZONE S8-B** |  | 2010-09-20 | 2011-09-29 |  |  |  |  |  |  |  |  |  |  |  |  |  |  |  |  |  |  |  |  |  |  |  |  |  |  |  |  |  |  |  |  |  |  |  |  |  |
| PFNS103301C150 |  | PA-FN ; Pile Cap & Grade Beam (Zone 8-B) | 25d | 2010-09-20 A | 2011-06-04 A | T09CO05115C0 | 100% |  | 2011-07-02 | 2011-07-30 |  |  | ANTI-TERMITE [1944 h]; CONCRETE [19024 h]; CONCRETE [478.33 m3]; ANTI-TERMITE [1330.54 m2]; THERMAL & MOISTURE [619.48 m2]; THERMAL & MOISTURE [472 h]; Cost | FSP | PFNS103301C0 | PFNXA03301C0 | NEW | ACCESS | 85 | 97845.84 | PA | C | FN | S8 | CT | 033 | 01 | SIS | B | N | BILL 2 | B02 | S2 | 02 | R00 | ACF02 | 033 |  |  |  |  |  |
| PFNS103321C150 |  | PA-FN ; Back filling & Drainage (Zone 8-B) | 14d | 2011-01-26 A | 2011-06-11 A | PFNS103301C150 | 100% |  | 2011-07-31 | 2011-08-15 |  |  | EXCAVATION & BACKFILLING [365.13 m3]; EXCAVATION & BACKFILLING [552 h]; Cost | FSP | PFNS103321C0 | PFNXA03321C0 | NEW | ACCESS | 60 | 38074.95 | PA | C | FN | S8 | CT | 033 | 21 | SIS | B | N | BILL 2 | B02 | S2 | 04 | R00 | ACF02 | 033 |  |  |  |  |  |
| PP3S103341C150 |  | PA-P3 ; RC work - Wall & Column (Zone 8-B) | 12d | 2011-02-22 A | 2011-07-31 A | PP3S103331C150 | 100% |  | 2011-09-04 | 2011-09-17 |  |  | CONCRETE [11880 h]; CONCRETE [298.96 m3]; Cost | FSP | PP3S103341C0 | PP3XA03341C0 | NEW |  | 60 | 16222.23 | PA | C | P3 | S8 | CT | 033 | 41 | SIS | B | N | BILL 2 | B02 | S2 | 05 | R00 | ACF03 | 033 | 100 |  |  |  |  |
| PP3S103331C150 |  | PA-P3 ; SOG Concrete (Zone 8-B) | 13.88d | 2011-03-16 A | 2011-06-22 A | PFNS103321C150 | 100% |  | 2011-05-18 | 2011-06-02 |  |  | ANTI-TERMITE [1704 h]; CONCRETE [16648 h]; CONCRETE [418.54 m3]; ANTI-TERMITE [1164.23 m2]; THERMAL & MOISTURE [542.05 m2]; THERMAL & MOISTURE [408 h]; Cost | FSP | PP3S103331C0 | PP3XA03331C0 | NEW | ACCESS | 30 | 439933.35 | PA | C | P3 | S8 | CT | 033 | 31 | SIS | B | N | BILL 2 | B02 | S2 | 06 | R00 | ACF02 | 033 |  |  |  |  |  |
| PP2S103351C150 |  | PA-P2 ; RC work - Slab (Zone 8-B) | 20d | 2011-07-10 A | 2011-07-31 A | PP3S103341C150 | 100% |  | 2011-07-04 | 2011-07-26 |  |  | CONCRETE [14752 h]; CONCRETE [370.87 m3]; Cost | FSP | PP2S103351C0 | PP2XA03351C0 | NEW |  |  |  | PA | C | P2 | S8 | CT | 033 | 51 | SIS | B | N | BILL 2 | B02 | S2 | 07 | R00 | ACF03 | 033 |  | PT |  |  |  |
| PP2S103361C150 |  | PA-P2 ; RC work - Wall & Column (Zone 8-B) | 18d | 2011-08-10 A | 2011-09-29 A | PP2S103351C150 | 100% |  | 2011-07-31 | 2011-08-20 |  |  | CONCRETE [9832 h]; CONCRETE [247.25 m3]; Cost | FSP | PP2S103361C0 | PP2XA03361C0 | NEW |  |  |  | PA | C | P2 | S8 | CT | 033 | 61 | SIS | B | N | BILL 2 | B02 | S2 | 05 | R00 | ACF03 | 033 | 100 |  | 15 | 0 |  |
|  | 81 | **CAR PARK ZONE S8-B1** |  | 2011-11-23 | 2011-12-20 |  |  |  |  |  |  |  |  |  |  |  |  |  |  |  |  |  |  |  |  |  |  |  |  |  |  |  |  |  |  |  |  |  |  |  |  |  |
| PGLS103391C260 |  | PA-GR ; RC work - Slab (Zone 8-B1) | 21d | 2011-11-23 | 2011-12-20 | PP1S103381C170, PGLS103391C160 |  |  |  |  | 150.06d | 120.71d | CONCRETE [8056 h]; CONCRETE [202.44 m3]; Cost | FSP | PGLS103391C0 | PGLXA03391C0 | NEW |  |  |  | PA | C | GL | S8 | CT | 033 | 91 | SIS | B1 | N | BILL 2 | B02 | S2 | 07 | R00 | ACF03 | 033 |  | PT |  |  | CP |
|  | 82 | **CAR PARK ZONE S8-B2** |  | 2012-04-17 | 2012-05-12 |  |  |  |  |  |  |  |  |  |  |  |  |  |  |  |  |  |  |  |  |  |  |  |  |  |  |  |  |  |  |  |  |  |  |  |  |  |
| PGLS103392R02 |  | PA-GR ; RC work - Slab (Zone 8-B2) | 21d | 2012-04-17 | 2012-05-12 | PP1S103382R02, PP1S103342R02, PP1S103343R02, PGLS103391C170 |  |  |  |  | 29.35d | 0d | CONCRETE [2272 h]; CONCRETE [57.1 m3]; Cost | FSP | PGLS103391C0 | PGLXA03391C0 | NEW |  |  |  | PA | C | GL | S8 | CT | 033 | 91 | SIS | B2 | N | BILL 2 | B02 | S2 | 07 | R00 | ACF03 | 033 |  |  |  |  | CP |
|  | 19 | **CAR PARK ZONE S8-C** |  | 2011-10-26 | 2011-11-23 |  |  |  |  |  |  |  |  |  |  |  |  |  |  |  |  |  |  |  |  |  |  |  |  |  |  |  |  |  |  |  |  |  |  |  |  |  |
| PGLS103391C160 |  | PA-GR ; RC work - Slab (Zone 8-C) | 21d | 2011-10-26 | 2011-11-23 | PP1S103381C170 |  |  |  |  | 150.06d | 0d | CONCRETE [10840 h]; CONCRETE [272.44 m3]; Cost | FSP | PGLS103391C0 | PGLXA03391C0 | NEW |  |  |  | PA | C | GL | S8 | CT | 033 | 91 | SIS | C | N | BILL 2 | B02 | S2 | 07 | R00 | ACF03 | 033 |  | PT |  |  |  |
|  | 91 | **CAR PARK ZONE S9-1** |  | 2010-07-14 | 2012-09-09 |  |  |  |  |  |  |  |  |  |  |  |  |  |  |  |  |  |  |  |  |  |  |  |  |  |  |  |  |  |  |  |  |  |  |  |  |  |
| PFNS903301C0 |  | PA-FN ; Pile Cap & Grade Beam (Zone 9-1) | 25d | 2010-07-14 A | 2011-05-25 A | DR5S105101C0, DR5S205101C0, DR5S305101C0, G03S105305C0 | 100% |  | 2011-03-21 | 2011-04-18 |  |  | ANTI-TERMITE [4024 h]; CONCRETE [39312 h]; CONCRETE [989 m3]; ANTI-TERMITE [2751.04 m2]; THERMAL & MOISTURE [1280.84 m2]; THERMAL & MOISTURE [960 h]; Cost |  | PFNS903301C0 | PFNXJ03301C0 |  | ACCESS | 100 |  | PA | C | FN | S9 | CT | 033 | 01 | SIS | 1 | N | BILL 2 | B02 | S1 | 02 | R00 | ACF02 | 033 |  |  |  |  |  |
| PFNS903321C0 |  | PA-FN ; Back filling & Drainage (Zone 9-1) | 14d | 2010-08-01 A | 2011-05-29 A | PFNS903301C0 | 100% |  | 2011-04-19 | 2011-05-04 |  |  | EXCAVATION & BACKFILLING [747 m3]; EXCAVATION & BACKFILLING [1120 h]; Cost |  | PFNS903321C0 | PFNXJ03321C0 |  | ACCESS | 100 |  | PA | C | FN | S9 | CT | 033 | 21 | SIS | 1 | N | BILL 2 | B02 | S1 | 04 | R00 | ACF02 | 033 |  |  |  |  |  |
| PP3S903331C0 |  | PA-P3 ; SOG Concrete (Zone 9-1) | 14d | 2011-02-24 A | 2011-06-01 A | PFNS903321C0 | 100% |  | 2011-04-06 | 2011-04-23 |  |  | ANTI-TERMITE [1240 h]; CONCRETE [12120 h]; CONCRETE [305 m3]; ANTI-TERMITE [848.4 m2]; THERMAL & MOISTURE [395 m2]; THERMAL & MOISTURE [304 h]; Cost |  | PP3S903331C0 | PP3XJ03331C0 |  | ACCESS | 90 | 167602.65 | PA | C | P3 | S9 | CT | 033 | 31 | SIS | 1 | N | BILL 2 | B02 | S1 | 06 | R00 | ACF02 | 033 |  |  |  |  |  |
| PP3S903341C0 |  | PA-P3 ; RC work - Wall & Column (Zone 9-1) | 9d | 2011-05-17 A | 2011-06-04 A | PP3S903331C0 | 100% |  | 2011-06-25 | 2011-07-06 |  |  | CONCRETE [29976 h]; CONCRETE [754 m3]; Cost |  | PP3S903341C0 | PP3XJ03341C0 |  |  | 80 | 57682.05 | PA | C | P3 | S9 | CT | 033 | 41 | SIS | 1 | N | BILL 2 | B02 | S1 | 05 | R00 | ACF03 | 033 |  |  |  |  |  |
| PP2S903351C0 |  | PA-P2 ; RC work - Slab (Zone 9-1) | 20.6d | 2011-06-04 A | 2011-07-31 A | PP3S903341C0 | 100% |  | 2011-06-04 | 2011-06-27 |  |  | CONCRETE [12120 h]; CONCRETE [305 m3]; Cost |  | PP2S903351C0 | PP2XJ03351C0 |  |  |  | 793645.18 | PA | C | P2 | S9 | CT | 033 | 51 | SIS | 1 | N | BILL 2 | B02 | S1 | 07 | R00 | ACF03 | 033 | 100 | PT |  |  |  |
| PP2S903361C0 |  | PA-P2 ; RC work - Wall & Column (Zone 9-1) | 10d | 2011-07-10 A | 2011-08-30 A | PP2S903351C0 | 100% |  | 2011-07-14 | 2011-07-26 |  |  | CONCRETE [29976 h]; CONCRETE [754 m3]; Cost |  | PP2S903361C0 | PP2XJ03361C0 |  |  |  |  | PA | C | P2 | S9 | CT | 033 | 61 | SIS | 1 | N | BILL 2 | B02 | S1 | 05 | R00 | ACF03 | 033 | 50 |  | 100 | 20 |  |
| PP1S903371C0 |  | PA-P1 ; RC work - Slab (Zone 9-1) | 21d | 2011-08-10 A | 2011-08-30 A | PP2S903361C0 | 100% |  | 2011-08-09 | 2011-09-04 |  |  | CONCRETE [12120 h]; CONCRETE [305 m3]; Cost |  | PP1S903371C0 | PP1XJ03371C0 |  |  |  |  | PA | C | P1 | S9 | CT | 033 | 71 | SIS | 1 | N | BILL 2 | B02 | S1 | 07 | R00 | ACF03 | 033 |  | PT | 100 | 0 |  |
| PP1S903371C10 |  | PA-P1 ; RC work - Close Opening for TC 15 (Zone 9-1) | 21d | 2012-08-13 | 2012-09-09 | BLZTC01553C0, PP1S903371C0 |  |  |  |  | 48.65d | 0d | CONCRETE [88 h]; CONCRETE [2 m3]; Cost |  | PP1S903371C0 | PP1XJ03371C0 | NEW |  |  |  | PA | C | P1 | S9 | CT | 033 | 71 | SIS | 1 | N | BILL 2 | B02 | S1 | 07 | R00 | ACF03 | 033 |  | PT |  |  |  |
|  | 92 | **CAR PARK ZONE S9-2** |  | 2010-06-07 | 2011-10-05 |  |  |  |  |  |  |  |  |  |  |  |  |  |  |  |  |  |  |  |  |  |  |  |  |  |  |  |  |  |  |  |  |  |  |  |  |  |
| PFNS903302C0 |  | PA-FN ; Pile Cap & Grade Beam (Zone 9-2) | 25d | 2010-06-07 A | 2011-06-16 A | G03S105305C0, PFNSX03301C0, SR8S205101C0 | 100% |  | 2011-04-19 | 2011-05-17 |  |  | ANTI-TERMITE [2664 h]; CONCRETE [26040 h]; CONCRETE [655 m3]; ANTI-TERMITE [1821.97 m2]; THERMAL & MOISTURE [848.28 m2]; THERMAL & MOISTURE [640 h]; Cost |  | PFNS903302C0 | PFNXJ03302C0 |  | ACCESS | 60 | 460034.3 | PA | C | FN | S9 | CT | 033 | 02 | SIS | 2 | N | BILL 2 | B02 | S1 | 02 | R00 | ACF02 | 033 |  |  |  |  |  |
| PFNS903322C0 |  | PA-FN ; Back filling & Drainage (Zone 9-2) | 13.88d | 2010-08-01 A | 2011-07-31 A | PFNS903302C0 | 100% |  | 2011-05-18 | 2011-06-02 |  |  | EXCAVATION & BACKFILLING [541 m3]; EXCAVATION & BACKFILLING [816 h]; Cost |  | PFNS903322C0 | PFNXJ03322C0 |  | ACCESS | 50 | 83912.83 | PA | C | FN | S9 | CT | 033 | 22 | SIS | 2 | N | BILL 2 | B02 | S1 | 04 | R00 | ACF02 | 033 |  |  |  |  |  |
| PP3S903332C0 |  | PA-P3 ; SOG Concrete (Zone 9-2) | 14d | 2011-02-24 A | 2011-07-31 A | PFNS903322C0 | 100% |  | 2011-04-19 | 2011-05-05 |  |  | ANTI-TERMITE [840 h]; CONCRETE [8184 h]; CONCRETE [206 m3]; ANTI-TERMITE [573.02 m2]; THERMAL & MOISTURE [266.79 m2]; THERMAL & MOISTURE [208 h]; Cost |  | PP3S903332C0 | PP3XJ03332C0 |  | ACCESS | 15 | 941860.83 | PA | C | P3 | S9 | CT | 033 | 32 | SIS | 2 | N | BILL 2 | B02 | S1 | 06 | R00 | ACF02 | 033 |  |  |  |  |  |
| PP3S903342C0 |  | PA-P3 ; RC work - Wall & Column (Zone 9-2) | 10d | 2011-07-10 A | 2011-07-19 A | PP3S903332C0 | 100% |  | 2011-07-05 | 2011-07-17 |  |  | CONCRETE [19872 h]; CONCRETE [500 m3]; Cost |  | PP3S903342C0 | PP3XJ03342C0 |  |  |  |  | PA | C | P3 | S9 | CT | 033 | 42 | SIS | 2 | N | BILL 2 | B02 | S1 | 05 | R00 | ACF03 | 033 | 100 |  |  |  |  |
| PP2S903352C0 |  | PA-P2 ; RC work - Slab (Zone 9-2) | 21d | 2011-07-12 A | 2011-08-30 A | PP2SX03351C0, PP3S903342C0 | 100% |  | 2011-08-24 | 2011-09-19 |  |  | CONCRETE [8184 h]; CONCRETE [206 m3]; Cost |  | PP2S903352C0 | PP2XJ03352C0 |  |  |  |  | PA | C | P2 | S9 | CT | 033 | 52 | SIS | 2 | N | BILL 2 | B02 | S1 | 07 | R00 | ACF03 | 033 | 100 | PT | 100 | 40 |  |
| PP1S903372C0 |  | PA-P1 ; RC work - Slab (Zone 9-2) | 21d | 2011-09-05 A | 2011-10-05 | PP1SX03371C0, PP2S903362C0 | 90% | 2.1d | 2011-09-28 | 2011-10-23 | 65.9d | 0d | CONCRETE [8184 h]; CONCRETE [206 m3]; Cost |  | PP1S903372C0 | PP1XJ03372C0 |  |  |  |  | PA | C | P1 | S9 | CT | 033 | 72 | SIS | 2 | N | BILL 2 | B02 | S1 | 07 | R00 | ACF03 | 033 |  | PT |  |  |  |
| PP2S903362C0 |  | PA-P2 ; RC work - Wall & Column (Zone 9-2) | 10d | 2011-09-05 A | 2011-09-29 A | PP2S903352C0 | 100% |  | 2011-09-01 | 2011-09-12 |  |  | CONCRETE [19872 h]; CONCRETE [500 m3]; Cost |  | PP2S903362C0 | PP2XJ03362C0 |  |  |  |  | PA | C | P2 | S9 | CT | 033 | 62 | SIS | 2 | N | BILL 2 | B02 | S1 | 05 | R00 | ACF03 | 033 |  |  |  |  |  |

| ID | WBS | Activity | Duration | Start | Finish | Predecessors | Complete | Remaining | Planned start | Planned finish | Total float | Free float | Resources | change id | IDDD | ACCESS DATES | RENZ % COMPLETE | Claimed This Month | CCAD BUILDING(SET) | CCAD PHASE(SET) | CCAD FLOOR(SET) | CCAD ZONE(SET) | CCAD WORK(SET) | CCAD SECTION(SET) | CCAD SERIAL No.(SET) | CCAD RESPONSIBILITY(SET) | CCAD Carpark code(SET) | CCAD Carpark district code(set) | CCAD CBS(SET) | CCAD BILL(SET) | CCAD HANDOVER(SET) | CCAD TAG(SET) | CCAD REV(SET) | CCADACF (SET) | CCAD SSCF | P_811 | P_711 | CCAD CSA | July2011 Target% Complete | CCAD (VO) | RENZ CODE | user_number8 | user_integer1 | user_integer2 | user_number7 |
| --- | --- | --- | --- | --- | --- | --- | --- | --- | --- | --- | --- | --- | --- | --- | --- | --- | --- | --- | --- | --- | --- | --- | --- | --- | --- | --- | --- | --- | --- | --- | --- | --- | --- | --- | --- | --- | --- | --- | --- | --- | --- | --- | --- | --- | --- |
|  | 101 | **CAR PARK ZONE S10-1** |  | 2010-06-07 | 2012-09-09 |  |  |  |  |  |  |  |  |  |  |  |  |  |  |  |  |  |  |  |  |  |  |  |  |  |  |  |  |  |  |  |  |  |  |  |  |  |  |  |  |
| PFNSX03301C0 |  | PA-FN ; Pile Cap & Grade Beam (Zone 10-1) | 25d | 2010-06-07 A | 2011-07-31 A | PFNS903301C0 | 100% |  | 2011-05-18 | 2011-06-15 |  |  | ANTI-TERMITE [2416 h]; CONCRETE [23616 h]; CONCRETE [594 m3]; ANTI-TERMITE [1652.29 m2]; THERMAL & MOISTURE [769.28 m2]; THERMAL & MOISTURE [576 h]; Cost | PFNSX03301C0 | PFNXK03301C0 | ACCESS | 80 | 194232.74 | PA | C | FN | SX | CT | 033 | 01 | SIS | 1 | N | BILL 2 | B02 | S1 | 02 | R00 | ACF02 | 033 |  |  |  |  |  |  |  |  |  |  |
| PFNSX03321C0 |  | PA-FN ; Back filling & Drainage (Zone 10-1) | 13d | 2010-08-01 A | 2011-07-31 A | PFNSX03301C0 | 100% |  | 2011-06-16 | 2011-07-02 |  |  | EXCAVATION & BACKFILLING [427 m3]; EXCAVATION & BACKFILLING [640 h]; Cost | PFNSX03321C0 | PFNXK03321C0 | ACCESS | 80 | 28343.3 | PA | C | FN | SX | CT | 033 | 21 | SIS | 1 | N | BILL 2 | B02 | S1 | 04 | R00 | ACF02 | 033 |  |  |  |  |  |  |  |  |  |  |
| PP3SX03331C0 |  | PA-P3 ; SOG Concrete (Zone 10-1) | 13.7d | 2011-05-10 A | 2011-07-31 A | PFNSX03321C0 | 100% |  | 2011-06-12 | 2011-06-27 |  |  | ANTI-TERMITE [768 h]; CONCRETE [7480 h]; CONCRETE [188 m3]; ANTI-TERMITE [522.95 m2]; THERMAL & MOISTURE [243.48 m2]; THERMAL & MOISTURE [184 h]; Cost | PP3SX03331C0 | PP3XK03331C0 | ACCESS | 15 | 795332.77 | PA | C | P3 | SX | CT | 033 | 31 | SIS | 1 | N | BILL 2 | B02 | S1 | 06 | R00 | ACF02 | 033 |  |  |  |  |  |  |  |  |  |  |
| PP2SX03351C0 |  | PA-P2 ; RC work - Slab (Zone 10-1) | 21d | 2011-07-10 A | 2011-08-30 A | PP3SX03341C0 | 100% |  | 2011-07-30 | 2011-08-23 |  |  | CONCRETE [7480 h]; CONCRETE [188 m3]; Cost | PP2SX03351C0 | PP2XK03351C0 |  |  |  | PA | C | P2 | SX | CT | 033 | 51 | SIS | 1 | N | BILL 2 | B02 | S1 | 07 | R00 | ACF03 | 033 | 100 | 30 | PT |  |  |  |  |  |  |  |
| PP3SX03341C0 |  | PA-P3 ; RC work - Wall & Column (Zone 10-1) | 10d | 2011-07-10 A | 2011-07-31 A | PP3SX03331C0 | 100% |  | 2011-07-18 | 2011-07-30 |  |  | CONCRETE [18048 h]; CONCRETE [454 m3]; Cost | PP3SX03341C0 | PP3XK03341C0 |  |  |  | PA | C | P3 | SX | CT | 033 | 41 | SIS | 1 | N | BILL 2 | B02 | S1 | 05 | R00 | ACF03 | 033 |  |  |  | 100 |  |  |  |  |  |  |
| PP1SX03371C0 |  | PA-P1 ; RC work - Slab (Zone 10-1) | 21d | 2011-08-10 A | 2011-10-03 | PP2SX03361C0 | 90% | 2.1d | 2011-08-28 | 2011-09-24 | 65.9d | 0d | CONCRETE [7480 h]; CONCRETE [188 m3]; Cost | PP1SX03371C0 | PP1XK03371C0 |  |  |  | PA | C | P1 | SX | CT | 033 | 71 | SIS | 1 | N | BILL 2 | B02 | S1 | 07 | R00 | ACF03 | 033 | 25 | 0 | PT |  | CP |  |  |  |  |  |
| PP2SX03361C0 |  | PA-P2 ; RC work - Wall & Column (Zone 10-1) | 10d | 2011-08-10 A | 2011-09-29 A | PP2SX03351C0 | 100% |  | 2011-08-16 | 2011-08-28 |  |  | CONCRETE [18048 h]; CONCRETE [454 m3]; Cost | PP2SX03361C0 | PP2XK03361C0 |  |  |  | PA | C | P2 | SX | CT | 033 | 61 | SIS | 1 | N | BILL 2 | B02 | S1 | 05 | R00 | ACF03 | 033 | 25 | 0 |  |  | CP |  |  |  |  |  |
| PP1SX03371C10 |  | PA-P1 ; RC work - Close Opening for TC 6 (Zone 10-1) | 21d | 2012-08-13 | 2012-09-09 | BLZTC01546C0, PP1SX03371C0 |  |  |  |  | 48.65d | 0d | CONCRETE [88 h]; CONCRETE [2 m3]; Cost | PP1SX03371C0 | PP1XK03371C0 |  |  |  | PA | C | P1 | SX | CT | 033 | 71 | SIS | 1 | N | BILL 2 | B02 | S1 | 07 | R00 | ACF03 | 033 |  |  | PT |  |  | NEW |  |  |  |  |
|  | 102 | **CAR PARK ZONE S10-2** |  | 2010-06-10 | 2011-11-10 |  |  |  |  |  |  |  |  |  |  |  |  |  |  |  |  |  |  |  |  |  |  |  |  |  |  |  |  |  |  |  |  |  |  |  |  |  |  |  |  |
| PFNSX03302C0 |  | PA-FN ; Pile Cap & Grade Beam (Zone 10-2) | 23.88d | 2010-06-10 A | 2011-07-31 A | PFNSX03301C0 | 100% |  | 2011-06-16 | 2011-07-14 |  |  | ANTI-TERMITE [2928 h]; CONCRETE [28624 h]; CONCRETE [720 m3]; ANTI-TERMITE [2002.78 m2]; THERMAL & MOISTURE [932.46 m2]; THERMAL & MOISTURE [696 h]; Cost | PFNSX03302C0 | PFNXK03302C0 | ACCESS | 30 | 894492.44 | PA | C | FN | SX | CT | 033 | 02 | SIS | 2 | N | BILL 2 | B02 | S1 | 02 | R00 | ACF02 | 033 |  |  |  |  |  |  |  |  |  |  |
| PFNSX03322C0 |  | PA-FN ; Back filling & Drainage (Zone 10-2) | 14d | 2010-10-15 A | 2011-08-30 A | PFNSX03302C0 | 100% |  | 2011-07-17 | 2011-08-01 |  |  | EXCAVATION & BACKFILLING [563 m3]; EXCAVATION & BACKFILLING [840 h]; Cost | PFNSX03322C0 | PFNXK03322C0 | ACCESS | 40 | 65264.11 | PA | C | FN | SX | CT | 033 | 22 | SIS | 2 | N | BILL 2 | B02 | S1 | 04 | R00 | ACF02 | 033 | 100 | 75 |  | 100 |  |  |  |  |  |  |
| PP3SX03332C0 |  | PA-P3 ; SOG Concrete (Zone 10-2) | 14d | 2011-07-10 A | 2011-09-29 A | PFNSX03322C0 | 100% |  | 2011-07-21 | 2011-08-07 |  |  | ANTI-TERMITE [912 h]; CONCRETE [8944 h]; CONCRETE [225 m3]; ANTI-TERMITE [625.87 m2]; THERMAL & MOISTURE [291.4 m2]; THERMAL & MOISTURE [216 h]; Cost | PP3SX03332C0 | PP3XK03332C0 | ACCESS |  | 369349.58 | PA | C | P3 | SX | CT | 033 | 32 | SIS | 2 | N | BILL 2 | B02 | S1 | 06 | R00 | ACF02 | 033 | 80 | 60 |  | 100 | CP |  |  |  |  |  |
| PP2SX03352C0 |  | PA-P2 ; RC work - Slab (Zone 10-2) | 21d | 2011-08-10 A | 2011-10-02 | PP3SX03342C0 | 95% | 1.05d | 2011-08-22 | 2011-09-18 | 77.95d | 0d | CONCRETE [8944 h]; CONCRETE [225 m3]; Cost | PP2SX03352C0 | PP2XK03352C0 |  |  |  | PA | C | P2 | SX | CT | 033 | 52 | SIS | 2 | N | BILL 2 | B02 | S1 | 07 | R00 | ACF03 | 033 | 40 | 0 | PT | 100 | CP |  |  |  |  |  |
| PP3SX03342C0 |  | PA-P3 ; RC work - Wall & Column (Zone 10-2) | 10d | 2011-08-10 A | 2011-09-29 A | PP3SX03332C0 | 100% |  | 2011-08-10 | 2011-08-22 |  |  | CONCRETE [21864 h]; CONCRETE [550 m3]; Cost | PP3SX03342C0 | PP3XK03342C0 |  |  |  | PA | C | P3 | SX | CT | 033 | 42 | SIS | 2 | N | BILL 2 | B02 | S1 | 05 | R00 | ACF03 | 033 | 80 | 0 |  | 100 | CP |  |  |  |  |  |
| PP2SX03362C0 |  | PA-P2 ; RC work - Wall & Column (Zone 10-2) | 10d | 2011-10-02 | 2011-10-13 | PP2SX03352C0 |  |  |  |  | 77.95d | 0d | CONCRETE [21864 h]; CONCRETE [550 m3]; Cost | PP2SX03362C0 | PP2XK03362C0 |  |  |  | PA | C | P2 | SX | CT | 033 | 62 | SIS | 2 | N | BILL 2 | B02 | S1 | 05 | R00 | ACF03 | 033 |  |  |  |  |  |  |  |  |  |  |
| PP1SX03372C0 |  | PA-P1 ; RC work - Slab (Zone 10-2) | 21d | 2011-10-13 | 2011-11-10 | PP2SX03362C0 |  |  |  |  | 77.95d | 0d | CONCRETE [8944 h]; CONCRETE [225 m3]; Cost | PP1SX03372C0 | PP1XK03372C0 |  |  |  | PA | C | P1 | SX | CT | 033 | 72 | SIS | 2 | N | BILL 2 | B02 | S1 | 07 | R00 | ACF03 | 033 |  |  | PT |  |  |  |  |  |  |  |
|  | 103 | **CAR PARK ZONE S10-3** |  | 2010-08-23 | 2012-05-08 |  |  |  |  |  |  |  |  |  |  |  |  |  |  |  |  |  |  |  |  |  |  |  |  |  |  |  |  |  |  |  |  |  |  |  |  |  |  |  |  |
| PFNSX03303C0 |  | PA-FN ; Pile Cap & Grade Beam (Zone 10-3) | 25d | 2010-08-23 A | 2011-10-03 | PAFOA31200C1 FF, PFNSX03302C0, PGLS403391C0 | 90% | 2.5d | 2011-07-17 | 2011-08-14 | 26.31d | 0d | ANTI-TERMITE [4744 h]; CONCRETE [46312 h]; CONCRETE [1165 m3]; ANTI-TERMITE [3240.61 m2]; THERMAL & MOISTURE [1508.78 m2]; THERMAL & MOISTURE [1128 h]; Cost | PFNSX03303C0 | PFNXK03303C0 | ACCESS | 50 | 168282.4 | PA | C | FN | SX | CT | 033 | 03 | SIS | 3 | N | BILL 2 | B02 | S1 | 02 | R00 | ACF02 | 033 |  |  |  | 70 | CP |  |  |  |  |  |
| PFNSX03323C0 |  | PA-FN ; Back filling & Drainage (Zone 10-3) | 13.88d | 2010-10-10 A | 2011-10-04 | PFNSX03303C0 | 95% | 0.69d | 2011-08-15 | 2011-09-01 | 26.31d | 0d | EXCAVATION & BACKFILLING [952 m3]; EXCAVATION & BACKFILLING [1432 h]; Cost | PFNSX03323C0 | PFNXK03323C0 | ACCESS | 50 | 24556.26 | PA | C | FN | SX | CT | 033 | 23 | SIS | 3 | N | BILL 2 | B02 | S1 | 04 | R00 | ACF02 | 033 |  |  |  | 70 | CP |  | 0 | 0 | 0 | 0 |
| PP3SX03333C0 |  | PA-P3 ; SOG Concrete (Zone 10-3) | 14d | 2011-09-05 A | 2011-10-16 | PFNSX03323C0 | 25% | 10.5d | 2011-09-20 | 2011-10-06 | 26.31d | 0d | ANTI-TERMITE [1456 h]; CONCRETE [14200 h]; CONCRETE [357 m3]; ANTI-TERMITE [993.04 m2]; THERMAL & MOISTURE [462.35 m2]; THERMAL & MOISTURE [352 h]; Cost | PP3SX03333C0 | PP3XK03333C0 | ACCESS |  |  | PA | C | P3 | SX | CT | 033 | 33 | SIS | 3 | N | BILL 2 | B02 | S1 | 06 | R00 | ACF02 | 033 |  |  |  |  |  |  |  |  |  |  |
| PP3SX03343C0 |  | PA-P3 ; RC work - Wall & Column (Zone 10-3) | 14d | 2011-10-16 | 2011-11-01 | PP3SX03333C0 |  |  |  |  | 26.31d | 0d | CONCRETE [35256 h]; CONCRETE [887 m3]; Cost | PP3SX03343C0 | PP3XK03343C0 |  |  |  | PA | C | P3 | SX | CT | 033 | 43 | SIS | 3 | N | BILL 2 | B02 | S1 | 05 | R00 | ACF03 | 033 |  |  |  |  |  |  |  |  |  |  |
| PP2SX03353C0 |  | PA-P2 ; RC work - Slab (Zone 10-3) | 21d | 2011-11-01 | 2011-11-30 | PP2S103351C150, PP3SX03343C0 |  |  |  |  | 26.31d | 0d | CONCRETE [14200 h]; CONCRETE [357 m3]; Cost | PP2SX03353C0 | PP2XK03353C0 |  |  |  | PA | C | P2 | SX | CT | 033 | 53 | SIS | 3 | N | BILL 2 | B02 | S1 | 07 | R00 | ACF03 | 033 |  |  | PT |  |  |  |  |  |  |  |
| PP2SX03363C0 |  | PA-P2 ; RC work - Wall & Column (Zone 10-3) | 14d | 2011-11-30 | 2011-12-18 | PP2SX03353C0 |  |  |  |  | 26.31d | 0d | CONCRETE [35256 h]; CONCRETE [887 m3]; Cost | PP2SX03363C0 | PP2XK03363C0 |  |  |  | PA | C | P2 | SX | CT | 033 | 63 | SIS | 3 | N | BILL 2 | B02 | S1 | 05 | R00 | ACF03 | 033 |  |  |  |  |  |  |  |  |  |  |
| PP1SX03373C0 |  | PA-P1 ; RC work - Slab (Zone 10-3) | 21d | 2011-12-18 | 2012-01-12 | CAFOA03300C1 FF, PP2SX03363C0 |  |  |  |  | 26.31d | 0d | CONCRETE [14200 h]; CONCRETE [357 m3]; Cost | PP1SX03373C0 | PP1XK03373C0 |  |  |  | PA | C | P1 | SX | CT | 033 | 73 | SIS | 3 | N | BILL 2 | B02 | S1 | 07 | R00 | ACF03 | 033 |  |  | PT |  |  |  |  |  |  |  |
| PP1SX03373C10 |  | PA-P1 ; RC work - Close Opening for Hoist 7 (Zone 10-3) | 21d | 2012-04-14 | 2012-05-08 | BLZHC01587C0, PP1SX03373C0 |  |  |  |  | 151.88d | 103.22d | CONCRETE [88 h]; CONCRETE [2 m3]; Cost | PP1SX03373C0 | PP1XK03373C0 |  |  |  | PA | C | P1 | SX | CT | 033 | 73 | SIS | 3 | N | BILL 2 | B02 | S1 | 07 | R00 | ACF03 | 033 |  |  | PT |  |  | NEW |  |  |  |  |

| ID | WBS | Activity | Type | Duration | Start | Finish | Predecessors | Complete | Remaining | Planned start | Planned finish | Total float | Free float | Resources | user_text2 | change id | IDDD | RENZ CODE | ACCESS DATES | RENZ % COMPLETE | Claimed This Month | CARPARK NEW ACTIVITIES_REV03 | CCAD BUILDING(SET) | CCAD PHASE(SET) | CCAD FLOOR(SET) | CCAD ZONE(SET) | CCAD WORK(SET) | CCAD SECTION(SET) | CCAD SERIAL No.(SET) | CCAD RESPONSIBILITY(SET) | CCAD Carpark code(SET) | CCAD Carpark district code(set) | CCAD CBS(SET) | CCAD BILL(SET) | CCAD HANDOVER(SET) | CCAD TAG(SET) | CCAD REV(SET) | CCAD (VO) | CCADACF (SET) | CCAD SSCF | July2011 Target% Complete | CCAD CSA |
| --- | --- | --- | --- | --- | --- | --- | --- | --- | --- | --- | --- | --- | --- | --- | --- | --- | --- | --- | --- | --- | --- | --- | --- | --- | --- | --- | --- | --- | --- | --- | --- | --- | --- | --- | --- | --- | --- | --- | --- | --- | --- | --- |
|  | 20 | **CAR PARK ZONE S11-A** |  |  |  |  |  |  |  |  |  |  |  |  |  |  |  |  |  |  |  |  |  |  |  |  |  |  |  |  |  |  |  |  |  |  |  |  |  |  |  |  |
|  | 111 | **CAR PARK ZONE S11-A1** |  |  | 2010-07-07 | 2012-04-17 |  |  |  |  |  |  |  |  |  |  |  |  |  |  |  |  |  |  |  |  |  |  |  |  |  |  |  |  |  |  |  |  |  |  |  |  |
| PFNS103301C170 |  | PA-FN ; Pile Cap & Grade Beam (Zone 11-A1) |  | 25d | 2010-07-07 A | 2011-07-31 A | MGNMI00101M0 | 100% |  | 2011-07-02 | 2011-07-30 |  |  | ANTI-TERMITE [2296 h]; CONCRETE [22408 h]; CONCRETE [563.58 m3]; ANTI-TERMITE [1567.68 m2]; THERMAL & MOISTURE [729.89 m2]; THERMAL & MOISTURE [552 h]; Cost | FSP | PFNS103301C0 | PFNXA03301C0 | NEW | ACCESS | 30 | 905778.43 | REV03 | PA | C | FN | SY | CT | 033 | 01 | SIS | A1 | N | BILL 2 | B02 | S2 | 02 | R00 | CP | ACF02 | 033 |  |  |
| PFNS103321C170 |  | PA-FN ; Back filling & Drainage (Zone 11-A1) |  | 14d | 2010-12-21 A | 2011-07-31 A | PFNS103301C170 | 100% |  | 2011-07-31 | 2011-08-15 |  |  | EXCAVATION & BACKFILLING [430.21 m3]; EXCAVATION & BACKFILLING [648 h]; Cost | FSP | PFNS103321C0 | PFNXA03321C0 | NEW | ACCESS | 20 | 156207.4 | REV03 | PA | C | FN | SY | CT | 033 | 21 | SIS | A1 | N | BILL 2 | B02 | S2 | 04 | R00 | CP | ACF02 | 033 |  |  |
| PP3S103341C170 |  | PA-P3 ; RC work - Wall & Column (Zone 11-A1) |  | 19d | 2011-04-14 A | 2011-07-26 A | PP3S103331C170 | 100% |  | 2011-06-14 | 2011-07-07 |  |  | CONCRETE [14008 h]; CONCRETE [352.24 m3]; Cost | FSP | PP3S103341C0 | PP3XA03341C0 | NEW |  | 10 | 109215.98 | REV03 | PA | C | P3 | SY | CT | 033 | 41 | SIS | A1 | N | BILL 2 | B02 | S2 | 05 | R00 | CP | ACF03 | 033 |  |  |
| PP3S103331C170 |  | PA-P3 ; SOG Concrete (Zone 11-A1) |  | 14d | 2011-06-22 A | 2011-07-27 A | PFNS103321C170 | 100% |  | 2011-07-03 | 2011-07-19 |  |  | ANTI-TERMITE [2008 h]; CONCRETE [19608 h]; CONCRETE [493.14 m3]; ANTI-TERMITE [1371.73 m2]; THERMAL & MOISTURE [638.66 m2]; THERMAL & MOISTURE [480 h]; Cost | FSP | PP3S103331C0 | PP3XA03331C0 | NEW | ACCESS |  | 793354.23 | REV03 | PA | C | P3 | SY | CT | 033 | 31 | SIS | A1 | N | BILL 2 | B02 | S2 | 06 | R00 | CP | ACF02 | 033 |  |  |
| PP2S103351C170 |  | PA-P2 ; RC work - Slab (Zone 11-A1) |  | 18d | 2011-07-10 A | 2011-08-30 A | PP3S103341C170 | 100% |  | 2011-07-26 | 2011-08-16 |  |  | CONCRETE [17376 h]; CONCRETE [436.98 m3]; Cost | FSP | PP2S103351C0 | PP2XA03351C0 | NEW |  |  |  | REV03 | PA | C | P2 | SY | CT | 033 | 51 | SIS | A1 | N | BILL 2 | B02 | S2 | 07 | R00 | CP | ACF03 | 033 | 50 | PT |
| PP2S103361C170 |  | PA-P2 ; RC work - Wall & Column (Zone 11-A1) |  | 24d | 2011-08-10 A | 2011-08-30 A | PP2S103351C170 | 100% |  | 2011-07-31 | 2011-08-27 |  |  | CONCRETE [11472 h]; CONCRETE [291.32 m3]; Cost | FSP | PP2S103361C0 | PP2XA03361C0 | NEW |  |  |  | REV03 | PA | C | P2 | SY | CT | 033 | 61 | SIS | A1 | N | BILL 2 | B02 | S2 | 05 | R00 | CP | ACF03 | 033 | 100 |  |
| PP1S103371C170 |  | PA-P1 ; RC work - Slab (Zone 11-A1) |  | 20.88d | 2011-08-28 A | 2011-09-29 A | PP2S103361C170 | 100% |  | 2011-08-28 | 2011-09-22 |  |  | CONCRETE [33592 h]; CONCRETE [844.94 m3]; Cost | FSP | PP1S103371C0 | PP1XA03371C0 | NEW |  |  |  | REV03 | PA | C | P1 | SY | CT | 033 | 71 | SIS | A1 | N | BILL 2 | B02 | S2 | 07 | R00 | CP | ACF03 | 033 | 25 | PT |
| PP1S103381C170 |  | PA-P1 ; RC work - Wall & Column (Zone 11-A1) |  | 24d | 2011-09-05 A | 2011-10-26 | PP1S103371C170 | 7% | 22.44d | 2011-09-13 | 2011-10-11 | 150.06d | 0d | CONCRETE [22392 h]; CONCRETE [536.29 m3]; Cost | FSP | PP1S103381C0 | PP1XA03381C0 | NEW |  |  |  | REV03 | PA | C | P1 | SY | CT | 033 | 81 | SIS | A1 | N | BILL 2 | B02 | S2 | 05 | R00 | CP | ACF03 | 033 |  |  |
| PGLS103391C170 |  | PA-GR ; RC work - Slab (Zone 11-A1) |  | 21d | 2012-03-24 | 2012-04-17 | PP1S103381C170, PP1S103342R02, PP1S103343R02, PP1S103382R02 |  |  |  |  | 29.35d | 0d | CONCRETE [6568 h]; CONCRETE [165.13 m3]; Cost | FSP | PGLS103391C0 | PGLXA03391C0 | NEW |  |  |  | REV03 | PA | C | GL | SY | CT | 033 | 91 | SIS | A1 | N | BILL 2 | B02 | S2 | 07 | R00 | CP | ACF03 | 033 |  | PT |
|  | 112 | **CAR PARK ZONE S11-A2** |  |  | 2010-12-21 | 2012-08-14 |  |  |  |  |  |  |  |  |  |  |  |  |  |  |  |  |  |  |  |  |  |  |  |  |  |  |  |  |  |  |  |  |  |  |  |  |
| PFNS103322R02 |  | PA-FN ; Back filling & Drainage (Zone 11-A2) |  | 5.88d | 2010-12-21 A | 2011-11-09 | PFNS103302R02 | 80% | 1.18d | 2011-11-19 | 2011-11-24 | 29.35d | 0d | EXCAVATION & BACKFILLING [485.12 m3]; EXCAVATION & BACKFILLING [736 h]; Cost | FSP | PFNS103321C0 | PFNXA03321C0 | NEW | ACCESS | 20 | 156207.4 | REV03 | PA | C | FN | SY | CT | 033 | 21 | SIS | A2 | N | BILL 2 | B02 | S2 | 04 | R00 | CP | ACF02 | 033 |  |  |
| PFNS103302R02 |  | PA-FN ; Pile Cap & Grade Beam (Zone 11-A2) |  | 9.88d | 2011-07-07 A | 2011-11-03 | PFNS103306R02 | 80% | 1.98d | 2011-10-17 | 2011-10-27 | 29.35d | 0d | ANTI-TERMITE [2584 h]; CONCRETE [25264 h]; CONCRETE [635.53 m3]; ANTI-TERMITE [1767.81 m2]; THERMAL & MOISTURE [823.06 m2]; THERMAL & MOISTURE [616 h]; Cost | FSP | PFNS103301C0 | PFNXA03301C0 | NEW | ACCESS | 30 | 905778.43 | REV03 | PA | C | FN | SY | CT | 033 | 01 | SIS | A2 | N | BILL 2 | B02 | S2 | 02 | R00 | CP | ACF02 | 033 |  |  |
| PFNS103322R12 |  | PA-FN ; Received Piling Design from Client (Zone 11-A2) | milestone | 0d | 2011-07-18 A | 2011-07-18 A | MGNMI00101M0 | 100% |  | 2011-07-31 | 2011-07-31 |  |  |  |  |  |  |  |  |  |  |  | PA |  | FN | SY |  |  |  |  | A2 | N |  | B02 |  |  | R00 | CP |  | GEN |  |  |
| PFNS103303R02 |  | PA-FN ; Demolition of Foundations-EI86 (Zone 11-A2) |  | 14d | 2011-09-01 A | 2011-09-15 A | PFNS103322R12 FS+12d | 100% |  | 2011-10-01 | 2011-10-16 |  |  | Cost | FSP | PFNS103301C0 | PFNXA03301C0 | NEW | ACCESS | 30 | 905778.43 | REV03 | PA | C | FN | SY | DM | 033 | 01 | SIS | A2 | N | BILL 2 | B02 | S2 | DE | VO | CP | ACF02 | 033 |  |  |
| PFNS103304R02 |  | PA-FN ; 12 New Piles for Core GL 16/18-EI86 (Zone 11-A2) |  | 11.88d | 2011-09-05 A | 2011-09-20 A | PFNS103303R02, A10260 FS+58d | 100% |  | 2011-10-22 | 2011-11-03 |  |  | CONCRETE; Cost | FSP | PFNS103301C0 | PFNXA03301C0 | NEW | ACCESS | 30 | 905778.43 | REV03 | PA | C | FN | SY | PI | 033 | 01 | SIS | A2 | N | BILL 2 | B02 | S2 | 02 | VO | CP | ACF02 | 033 |  |  |
| PFNS103305R02 |  | PA-FN ; 3 New Piles for Pile Cap AQ-16, EI86 (Zone 11-A2) |  | 2.88d | 2011-09-05 A | 2011-09-20 A | PFNS103304R02, A10260 FS+58d | 100% |  | 2011-11-05 | 2011-11-10 |  |  | CONCRETE; Cost | FSP | PFNS103301C0 | PFNXA03301C0 | NEW | ACCESS | 30 | 905778.43 | REV03 | PA | C | FN | SY | PI | 033 | 01 | SIS | A2 | N | BILL 2 | B02 | S2 | 02 | VO | CP | ACF02 | 033 |  |  |
| PFNS103307R02 |  | PA-FN ; New Pile Cap GL AQ-16, EI86 (Zone 11-A2) |  | 10d | 2011-10-01 | 2011-10-11 | PFNS103305R02 |  |  |  |  | 50.5d | 21.15d | CONCRETE; Cost | FSP | PFNS103301C0 | PFNXA03301C0 | NEW | ACCESS | 30 | 905778.43 | REV03 | PA | C | FN | SY | CT | 033 | 01 | SIS | A2 | N | BILL 2 | B02 | S2 | 02 | VO | CP | ACF02 | 033 |  |  |
| PFNS103306R02 |  | PA-FN ; New Raft for Core GL 16/18-EI86 (Zone 11-A2) |  | 25d | 2011-10-04 | 2011-11-01 | PFNS103305R02, PFNS103304R02 FS+12d, A10260 |  |  |  |  | 29.35d | 0d | CONCRETE; Cost | FSP | PFNS103301C0 | PFNXA03301C0 | NEW | ACCESS | 30 | 905778.43 | REV03 | PA | C | FN | SY | CT | 033 | 01 | SIS | A2 | N | BILL 2 | B02 | S2 |  | VO | CP | ACF02 | 033 |  |  |
| PP3S103332R02 |  | PA-P3 ; SOG Concrete (Zone 11-A2) |  | 14d | 2011-11-09 | 2011-11-27 | PFNS103322R02, PFNS103307R02 |  |  |  |  | 29.35d | 0d | ANTI-TERMITE [2256 h]; CONCRETE [22104 h]; CONCRETE [556.09 m3]; ANTI-TERMITE [1546.85 m2]; THERMAL & MOISTURE [720.19 m2]; THERMAL & MOISTURE [544 h]; Cost | FSP | PP3S103331C0 | PP3XA03331C0 | NEW | ACCESS |  | 793354.23 | REV03 | PA | C | P3 | SY | CT | 033 | 31 | SIS | A2 | N | BILL 2 | B02 | S2 | 06 | R00 | CP | ACF02 | 033 |  |  |
| PP3S103342R02 |  | PA-P3 ; RC work - Wall & Column (Zone 11-A2) |  | 20d | 2011-11-27 | 2011-12-21 | PP3S103332R02 |  |  |  |  | 29.35d | 0d | CONCRETE [15792 h]; CONCRETE [397.21 m3]; Cost | FSP | PP3S103341C0 | PP3XA03341C0 | NEW |  | 10 | 109215.98 | REV03 | PA | C | P3 | SY | CT | 033 | 41 | SIS | A2 | N | BILL 2 | B02 | S2 | 05 | R00 | CP | ACF03 | 033 |  |  |
| PP2S103352R02 |  | PA-P2 ; RC work - Slab (Zone 11-A2) |  | 18d | 2011-12-21 | 2012-01-12 | PP3S103342R02, PP3S103350R02, PP3S103349R02 |  |  |  |  | 29.35d | 0d | CONCRETE [19584 h]; CONCRETE [492.76 m3]; Cost | FSP | PP2S103351C0 | PP2XA03351C0 | NEW |  |  |  | REV03 | PA | C | P2 | SY | CT | 033 | 51 | SIS | A2 | N | BILL 2 | B02 | S2 | 07 | R00 | CP | ACF03 | 033 | 50 |  |
| PP2S103353R02 |  | PA-P2 ; Slab in New Core GL 16/18-EI86 (Zone 11-A2) |  | 0d | 2011-12-21 | 2011-12-21 | PP3S103349R02, PP3S103350R02 |  |  |  |  | 67.35d | 38d | Cost | FSP | PP2S103351C0 | PP2XA03351C0 | NEW |  |  |  | REV03 | PA | C | P2 | SY | CT | 033 | 51 | SIS | A2 | N | BILL 2 | B02 | S2 | 07 | VO | CP | ACF03 | 033 | 50 |  |
| PP3S103349R02 |  | PA-P3 ; Walls for New Core GL 16/18-EI86 (Zone 11-A2) |  | 0d | 2011-12-21 | 2011-12-21 | PP3S103342R02 |  |  |  |  | 29.35d | 0d | Cost | FSP | PP3S103341C0 | PP3XA03341C0 | NEW |  | 10 | 109215.98 | REV03 | PA | C | P3 | SY | CT | 033 | 41 | SIS | A2 | N | BILL 2 | B02 | S2 | 04 | VO | CP | ACF03 | 033 |  |  |
| PP3S103350R02 |  | PA-P3 ; New Column GL AQ/16 -EI86 (Zone 11-A2) |  | 0d | 2011-12-21 | 2011-12-21 | PP3S103349R02 SS, PP3S103342R02 |  |  |  |  | 29.35d | 0d | Cost | FSP | PP3S103341C0 | PP3XA03341C0 | NEW |  | 10 | 109215.98 | REV03 | PA | C | P3 | SY | CT | 033 | 41 | SIS | A2 | N | BILL 2 | B02 | S2 | 05 | VO | CP | ACF03 | 033 |  |  |
| PP2S103362R02 |  | PA-P2 ; RC work - Wall & Column (Zone 11-A2) |  | 20d | 2012-01-12 | 2012-02-06 | PP2S103352R02 |  |  |  |  | 29.35d | 0d | CONCRETE [13056 h]; CONCRETE [328.5 m3]; Cost | FSP | PP2S103361C0 | PP2XA03361C0 | NEW |  |  |  | REV03 | PA | C | P2 | SY | CT | 033 | 61 | SIS | A2 | N | BILL 2 | B02 | S2 | 05 | R00 | CP | ACF03 | 033 | 100 |  |
| PP1S103353R02 |  | PA-P1 ; Slab in New core GL 16/18-EI86 (Zone 11-A2) |  | 0d | 2012-02-06 | 2012-02-06 | PP2S103342R02, PP2S103343R02 |  |  |  |  | 69.35d | 40d | Cost | FSP | PP2S103351C0 | PP2XA03351C0 | NEW |  |  |  | REV03 | PA | C | P1 | SY | CT | 033 | 51 | SIS | A2 | N | BILL 2 | B02 | S2 | 07 | VO | CP | ACF03 | 033 | 50 |  |
| PP1S103372R02 |  | PA-P1 ; RC work - Slab (Zone 11-A2) |  | 20d | 2012-02-06 | 2012-02-29 | PP2S103362R02, PP2S103342R02, PP2S103343R02 |  |  |  |  | 29.35d | 0d | CONCRETE [19728 h]; CONCRETE [496.23 m3]; Cost | FSP | PP1S103371C0 | PP1XA03371C0 | NEW |  |  |  | REV03 | PA | C | P1 | SY | CT | 033 | 71 | SIS | A2 | N | BILL 2 | B02 | S2 | 07 | R00 | CP | ACF03 | 033 | 25 |  |
| PP2S103342R02 |  | PA-P2 ; Walls for New core GL 16/18-EI86 (Zone 11-A2) |  | 0d | 2012-02-06 | 2012-02-06 | PP2S103362R02, PP2S103353R02 |  |  |  |  | 29.35d | 0d | Cost | FSP | PP3S103341C0 | PP3XA03341C0 | NEW |  | 10 | 109215.98 | REV03 | PA | C | P2 | SY | CT | 033 | 41 | SIS | A2 | N | BILL 2 | B02 | S2 | 04 | VO | CP | ACF03 | 033 |  |  |
| PP2S103343R02 |  | PA-P2 ; New Column GL AQ/16 -EI86 (Zone 11-A2) |  | 0d | 2012-02-06 | 2012-02-06 | PP2S103362R02, PP2S103342R02 SS, PP2S103353R02 |  |  |  |  | 29.35d | 0d | Cost | FSP | PP3S103341C0 | PP3XA03341C0 | NEW |  | 10 | 109215.98 | REV03 | PA | C | P2 | SY | CT | 033 | 41 | SIS | A2 | N | BILL 2 | B02 | S2 | 05 | VO | CP | ACF03 | 033 |  |  |
| PP1S103382R02 |  | PA-P1 ; RC work - Wall & Column (Zone 11-A2) |  | 20d | 2012-02-29 | 2012-03-24 | PP1S103372R02, PP1S103372R02 FF |  |  |  |  | 29.35d | 0d | CONCRETE [13152 h]; CONCRETE [330.82 m3]; Cost | FSP | PP1S103381C0 | PP1XA03381C0 | NEW |  |  |  | REV03 | PA | C | P1 | SY | CT | 033 | 81 | SIS | A2 | N | BILL 2 | B02 | S2 | 05 | R00 | CP | ACF03 | 033 |  |  |
| PGLS103352R02 |  | PA-GR ; Slab in New core GL 16/18-EI86 (Zone 11-A2) |  | 0d | 2012-03-24 | 2012-03-24 | PP1S103342R02, PP1S103343R02 |  |  |  |  | 94.85d | 68.87d | Cost | FSP | PP2S103351C0 | PP2XA03351C0 | NEW |  |  |  | REV03 | PA | C | GL | SY | CT | 033 | 51 | SIS | A2 | N | BILL 2 | B02 | S2 | 07 | VO | CP | ACF03 | 033 | 50 |  |
| PP1S103342R02 |  | PA-P1 ; Walls for New core GL 16/18-EI86 (Zone 11-A2) |  | 0d | 2012-03-24 | 2012-03-24 | PP1S103343R02 SS, PP1S103353R02, PP1S103382R02 |  |  |  |  | 29.35d | 0d | Cost | FSP | PP3S103341C0 | PP3XA03341C0 | NEW |  | 10 | 109215.98 | REV03 | PA | C | P1 | SY | CT | 033 | 41 | SIS | A2 | N | BILL 2 | B02 | S2 | 04 | VO | CP | ACF03 | 033 |  |  |
| PP1S103343R02 |  | PA-P1 ; New column GL AQ/16 -EI86 (Zone 11-A2) |  | 0d | 2012-03-24 | 2012-03-24 | PP1S103353R02, PP1S103382R02 |  |  |  |  | 29.35d | 0d | Cost | FSP | PP3S103341C0 | PP3XA03341C0 | NEW |  | 10 | 109215.98 | REV03 | PA | C | P1 | SY | CT | 033 | 41 | SIS | A2 | N | BILL 2 | B02 | S2 | 05 | VO | CP | ACF03 | 033 |  |  |
| PGLS103394R02 |  | PA-GR ; RC work - Slab (Zone 11-A2) |  | 21d | 2012-05-19 | 2012-06-12 | PP1S103382R02, PP1S103381C190 |  |  |  |  | 25.98d | 0d | CONCRETE [7120 h]; CONCRETE [178.89 m3]; Cost | FSP | PGLS103391C0 | PGLXA03391C0 | NEW |  |  |  | REV03 | PA | C | GL | SY | CT | 033 | 91 | SIS | A2 | N | BILL 2 | B02 | S2 | 07 | R00 | CP | ACF03 | 033 |  |  |
| PGLS103391C210 |  | PA-GR ; RC work - Close Opening for TC 12 (Zone 11-A2) |  | 20.88d | 2012-07-22 | 2012-08-14 | BLZTC01552C0, PGLS103394R02, PGLS103352R02, PZ9GZ03351R2 FF, PV09GZ03351R2 FF, UV09GZ03351R2 FF |  |  |  |  | 77.23d | 18.87d | CONCRETE [88 h]; CONCRETE [2 m3]; Cost | FSP | PGLS103391C0 | PGLXA03391C0 | NEW |  |  |  | REV03 | PA | C | GL | SY | CT | 033 | 91 | SIS | A2 | N | BILL 2 | B02 | S2 | 07 | R00 | CP | ACF03 | 033 |  | PT |

| ID | WBS | Activity | Duration | Start | Finish | Predecessors | Complete | Remaining | Planned start | Planned finish | Total float | Free float | Resources | user_text2 | change id | IDDD | RENZ CODE | ACCESS DATES | RENZ % COMPLETE | Claimed This Month | CCAD BUILDING(SET) | CCAD PHASE(SET) | CCAD FLOOR(SET) | CCAD ZONE(SET) | CCAD WORK(SET) | CCAD SECTION(SET) | CCAD SERIAL No.(SET) | CCAD RESPONSIBILITY(SET) | CCAD Carpark code(SET) | CCAD Carpark district code(set) | CCAD CBS(SET) | CCAD BILL(SET) | CCAD HANDOVER(SET) | CCAD TAG(SET) | CCAD REV(SET) | CCADACF (SET) | CCAD SSCF | P_811 | P_711 | CCAD CSA | Actual Cost | Phase | Area/ Department | Grids | Are | Weight & Nos | Process | Levels |
| --- | --- | --- | --- | --- | --- | --- | --- | --- | --- | --- | --- | --- | --- | --- | --- | --- | --- | --- | --- | --- | --- | --- | --- | --- | --- | --- | --- | --- | --- | --- | --- | --- | --- | --- | --- | --- | --- | --- | --- | --- | --- | --- | --- | --- | --- | --- | --- | --- |
|  | 24 | **CAR PARK ZONE S11-B** |  | 2010-09-07 | 2012-01-19 |  |  |  |  |  |  |  |  |  |  |  |  |  |  |  |  |  |  |  |  |  |  |  |  |  |  |  |  |  |  |  |  |  |  |  |  |  |  |  |  |  |  |  |
| PFNS103301C180 |  | PA-FN ; Pile Cap & Grade Beam (Zone 11-B) | 25d | 2010-09-07 A | 2011-06-28 A | PAFOA31200C1 FF, PGLS103391C130 FS-20d | 100% |  | 2011-09-03 | 2011-10-01 |  |  | ANTI-TERMITE [3448 h]; CONCRETE [33696 h]; CONCRETE [847.59 m3]; ANTI-TERMITE [2357.69 m2]; THERMAL & MOISTURE [1097.7 m2]; THERMAL & MOISTURE [832 h]; Cost | FSP | PFNS103301C0 | PFNXA03301C0 | NEW | ACCESS | 80 | 232736.19 | PA | C | FN | SY | CT | 033 | 01 | SIS | B | N | BILL 2 | B02 | S2 | 02 | R00 | ACF02 | 033 |  |  |  |  |  |  |  |  |  |  |  |
| PFNS103321C180 |  | PA-FN ; Back filling & Drainage (Zone 11-B) | 14d | 2010-10-01 A | 2011-06-30 A | PFNS103301C180 | 100% |  | 2011-10-02 | 2011-10-17 |  |  | EXCAVATION & BACKFILLING [647 m3]; EXCAVATION & BACKFILLING [976 h]; Cost | FSP | PFNS103321C0 | PFNXA03321C0 | NEW | ACCESS | 60 | 67923.84 | PA | C | FN | SY | CT | 033 | 21 | SIS | B | N | BILL 2 | B02 | S2 | 04 | R00 | ACF02 | 033 |  |  |  |  |  |  |  |  |  |  |  |
| PP3S103341C180 |  | PA-P3 ; RC work - Wall & Column (Zone 11-B) | 20d | 2011-02-24 A | 2011-09-29 A | PP3S103331C180 | 100% |  | 2011-11-03 | 2011-11-30 |  |  | CONCRETE [21064 h]; CONCRETE [529.74 m3]; Cost | FSP | PP3S103341C0 | PP3XA03341C0 | NEW |  | 10 | 19293.14 | PA | C | P3 | SY | CT | 033 | 41 | SIS | B | N | BILL 2 | B02 | S2 | 05 | R00 | ACF03 | 033 |  |  |  |  |  |  |  |  |  |  |  |
| PP3S103331C180 |  | PA-P3 ; SOG Concrete (Zone 11-B) | 14d | 2011-08-10 A | 2011-09-29 A | PFNS103321C180, PGLS103391C130 FS-20d | 100% |  | 2011-08-17 | 2011-09-04 |  |  | ANTI-TERMITE [3016 h]; CONCRETE [29488 h]; CONCRETE [741.65 m3]; ANTI-TERMITE [2063 m2]; THERMAL & MOISTURE [960.5 m2]; THERMAL & MOISTURE [720 h]; Cost | FSP | PP3S103331C0 | PP3XA03331C0 | NEW | ACCESS |  |  | PA | C | P3 | SY | CT | 033 | 31 | SIS | B | N | BILL 2 | B02 | S2 | 06 | R00 | ACF02 | 033 | 50 | 0 |  |  |  |  |  |  |  |  |  |
| PP2S103351C180 |  | PA-P2 ; RC work - Slab (Zone 11-B) | 21d | 2011-09-05 A | 2011-10-23 | PP3S103341C180 | 25% | 15.75d | 2011-10-02 | 2011-10-26 | 23.88d | 0d | CONCRETE [26128 h]; CONCRETE [657.18 m3]; Cost | FSP | PP2S103351C0 | PP2XA03351C0 | NEW |  |  |  | PA | C | P2 | SY | CT | 033 | 51 | SIS | B | N | BILL 2 | B02 | S2 | 07 | R00 | ACF03 | 033 |  |  | PT |  |  |  |  |  |  |  |  |
| PP2S103361C180 |  | PA-P2 ; RC work - Wall & Column (Zone 11-B) | 14d | 2011-10-23 | 2011-11-12 | PP2S103351C180 |  |  |  |  | 23.88d | 0d | CONCRETE [17416 h]; CONCRETE [438.13 m3]; Cost | FSP | PP2S103361C0 | PP2XA03361C0 | NEW |  |  |  | PA | C | P2 | SY | CT | 033 | 61 | SIS | B | N | BILL 2 | B02 | S2 | 05 | R00 | ACF03 | 033 |  |  |  |  |  |  |  |  |  |  |  |
| PP1S103371C180 |  | PA-P1 ; RC work - Slab (Zone 11-B) | 20.88d | 2011-11-12 | 2011-12-08 | PP2S103361C180 |  |  |  |  | 23.88d | 0d | CONCRETE [25128 h]; CONCRETE [632.12 m3]; Cost | FSP | PP1S103371C0 | PP1XA03371C0 | NEW |  |  |  | PA | C | P1 | SY | CT | 033 | 71 | SIS | B | N | BILL 2 | B02 | S2 | 07 | R00 | ACF03 | 033 |  |  | PT |  |  |  |  |  |  |  |  |
| PP1S103381C180 |  | PA-P1 ; RC work - Wall & Column (Zone 11-B) | 14d | 2011-12-08 | 2011-12-25 | PP1S103371C180 |  |  |  |  | 23.88d | 0d | CONCRETE [16752 h]; CONCRETE [421.4 m3]; Cost | FSP | PP1S103381C0 | PP1XA03381C0 | NEW |  |  |  | PA | C | P1 | SY | CT | 033 | 81 | SIS | B | N | BILL 2 | B02 | S2 | 05 | R00 | ACF03 | 033 |  |  |  |  |  |  |  |  |  |  |  |
| PGLS103391C180 |  | PA-GR ; RC work - Slab (Zone 11-B) | 21d | 2011-12-25 | 2012-01-19 | PP1S103381C180 |  |  |  |  | 23.88d | 0d | CONCRETE [8376 h]; CONCRETE [210.84 m3]; Cost | FSP | PGLS103391C0 | PGLXA03391C0 | NEW |  |  |  | PA | C | GL | SY | CT | 033 | 91 | SIS | B | N | BILL 2 | B02 | S2 | 07 | R00 | ACF03 | 033 |  |  | PT |  |  |  |  |  |  |  |  |
|  | 25 | **CAR PARK ZONE S11-C** |  | 2010-07-07 | 2012-07-08 |  |  |  |  |  |  |  |  |  |  |  |  |  |  |  |  |  |  |  |  |  |  |  |  |  |  |  |  |  |  |  |  |  |  |  |  |  |  |  |  |  |  |  |
| PFNS103301C190 |  | PA-FN ; Pile Cap & Grade Beam (Zone 11-C) | 25d | 2010-07-07 A | 2011-10-16 | PAFOA31200C1 FF, PFNS103301C180 | 60% | 10d | 2011-07-02 | 2011-07-30 | 85.5d | 0d | ANTI-TERMITE [3616 h]; CONCRETE [35256 h]; CONCRETE [887.02 m3]; ANTI-TERMITE [2467.37 m2]; THERMAL & MOISTURE [1148.77 m2]; THERMAL & MOISTURE [864 h]; Cost | FSP | PFNS103301C0 | PFNXA03301C0 | NEW | ACCESS | 40 | 243205.02 | PA | C | FN | SY | CT | 033 | 01 | SIS | C | N | BILL 2 | B02 | S2 | 02 | R00 | ACF02 | 033 |  |  |  |  |  |  |  |  |  |  |  |
| PFNS103321C190 |  | PA-FN ; Back filling & Drainage (Zone 11-C) | 14d | 2010-12-21 A | 2011-11-01 | PFNS103301C190 FF+14d | 60% | 5.6d | 2011-07-31 | 2011-08-15 | 85.5d | 59.52d | EXCAVATION & BACKFILLING [677.1 m3]; EXCAVATION & BACKFILLING [1024 h]; Cost | FSP | PFNS103321C0 | PFNXA03321C0 | NEW | ACCESS | 30 | 53234.38 | PA | C | FN | SY | CT | 033 | 21 | SIS | C | N | BILL 2 | B02 | S2 | 04 | R00 | ACF02 | 033 |  |  |  |  |  |  |  |  |  |  |  |
| PP3S103341C190 |  | PA-P3 ; RC work - Wall & Column (Zone 11-C) | 20d | 2011-02-24 A | 2012-02-27 | PP3S103331C190 FF+20d | 20% | 16d | 2011-09-04 | 2011-09-26 | 25.98d | 0d | CONCRETE [22048 h]; CONCRETE [554.39 m3]; Cost | FSP | PP3S103341C0 | PP3XA03341C0 | NEW |  | 10 | 20160.89 | PA | C | P3 | SY | CT | 033 | 41 | SIS | C | N | BILL 2 | B02 | S2 | 05 | R00 | ACF03 | 033 |  |  |  |  |  |  |  |  |  |  |  |
| PP3S103331C190 |  | PA-P3 ; SOG Concrete (Zone 11-C) | 14d | 2012-01-17 | 2012-02-02 | PFNS103321C190, PP3S703334C0 |  |  |  |  | 25.98d | 0d | ANTI-TERMITE [3160 h]; CONCRETE [30856 h]; CONCRETE [776.14 m3]; ANTI-TERMITE [2158.94 m2]; THERMAL & MOISTURE [1005.17 m2]; THERMAL & MOISTURE [760 h]; Cost | FSP | PP3S103331C0 | PP3XA03331C0 | NEW | ACCESS |  |  | PA | C | P3 | SY | CT | 033 | 31 | SIS | C | N | BILL 2 | B02 | S2 | 06 | R00 | ACF02 | 033 |  |  |  |  |  |  |  |  |  |  |  |
| PP2S103351C190 |  | PA-P2 ; RC work - Slab (Zone 11-C) | 21d | 2012-02-27 | 2012-03-22 | PP2S103351C180, PP3S103341C190 |  |  |  |  | 25.98d | 0d | CONCRETE [27336 h]; CONCRETE [687.74 m3]; Cost | FSP | PP2S103351C0 | PP2XA03351C0 | NEW |  |  |  | PA | C | P2 | SY | CT | 033 | 51 | SIS | C | N | BILL 2 | B02 | S2 | 07 | R00 | ACF03 | 033 |  |  | PT |  |  |  |  |  |  |  |  |
| PP2S103361C190 |  | PA-P2 ; RC work - Wall & Column (Zone 11-C) | 14d | 2012-03-22 | 2012-04-08 | PP2S103351C190 |  |  |  |  | 25.98d | 0d | CONCRETE [18232 h]; CONCRETE [458.5 m3]; Cost | FSP | PP2S103361C0 | PP2XA03361C0 | NEW |  |  |  | PA | C | P2 | SY | CT | 033 | 61 | SIS | C | N | BILL 2 | B02 | S2 | 05 | R00 | ACF03 | 033 |  |  |  |  |  |  |  |  |  |  |  |
| PP1S103371C190 |  | PA-P1 ; RC work - Slab (Zone 11-C) | 21d | 2012-04-08 | 2012-05-02 | PP1S103371C180, PP2S103361C190 |  |  |  |  | 25.98d | 0d | CONCRETE [25864 h]; CONCRETE [650.62 m3]; Cost | FSP | PP1S103371C0 | PP1XA03371C0 | NEW |  |  |  | PA | C | P1 | SY | CT | 033 | 71 | SIS | C | N | BILL 2 | B02 | S2 | 07 | R00 | ACF03 | 033 |  |  | PT |  |  |  |  |  |  |  |  |
| PP1S103381C190 |  | PA-P1 ; RC work - Wall & Column (Zone 11-C) | 14d | 2012-05-02 | 2012-05-19 | PP1S103371C190 |  |  |  |  | 25.98d | 0d | CONCRETE [17248 h]; CONCRETE [433.74 m3]; Cost | FSP | PP1S103381C0 | PP1XA03381C0 | NEW |  |  |  | PA | C | P1 | SY | CT | 033 | 81 | SIS | C | N | BILL 2 | B02 | S2 | 05 | R00 | ACF03 | 033 |  |  |  |  |  |  |  |  |  |  |  |
| PGLS103391C190 |  | PA-GR ; RC work - Slab (Zone 11-C) | 21d | 2012-06-12 | 2012-07-08 | PP1S103381C190, PGLS103391C170, PGLS103394R02, PGLS103352R02 |  |  |  |  | 25.98d | 0d | CONCRETE [4416 h]; CONCRETE [111.02 m3]; Cost | FSP | PGLS103391C0 | PGLXA03391C0 | NEW |  |  |  | PA | C | GL | SY | CT | 033 | 91 | SIS | C | N | BILL 2 | B02 | S2 | 07 | R00 | ACF03 | 033 |  |  | PT |  |  |  |  |  |  |  |  |
|  | 28 | **CAR PARK ZONE S11-D** |  | 2011-12-25 | 2012-01-19 |  |  |  |  |  |  |  |  |  |  |  |  |  |  |  |  |  |  |  |  |  |  |  |  |  |  |  |  |  |  |  |  |  |  |  |  |  |  |  |  |  |  |  |
| PGLS103391C200 |  | PA-GR ; RC work - Slab (Zone 11-D) | 21d | 2011-12-25 | 2012-01-19 | PGLS103391C130, PP1S103381C180 |  |  |  |  | 23.88d | 0d | CONCRETE [6792 h]; CONCRETE [170.92 m3]; Cost | FSP | PGLS103391C0 | PGLXA03391C0 | NEW |  |  |  | PA | C | GL | SY | CT | 033 | 91 |  | D | N |  | B02 |  | 07 | R00 | ACF03 | 033 |  |  | PT |  |  |  |  |  |  |  |  |
|  | P3 | **P3 LEVEL - MEP & Finishes** |  | 2011-06-11 | 2013-01-30 |  |  |  |  |  |  |  |  |  |  |  |  |  |  |  |  |  |  |  |  |  |  |  |  |  |  |  |  |  |  |  |  |  |  |  |  |  |  |  |  |  |  |  |
| PP3S105101C10 |  | PA-P3 ; Secondary Steel for Mech Trenches | 4d | 2011-08-10 A | 2012-02-12 | PP3S403331C0, PP3S403332C0, PP3S503331C0 | 85% | 0.6d | 2012-01-29 | 2012-02-01 | 374.1d | 371.23d | STRUCTURAL STEEL [30 T(Fe)]; Cost |  | DP3S205101C0 |  |  |  |  |  | PA | C | P3 | GEN | SW | 055 | 01 |  |  |  |  | B02 |  | 01 | R00 | ACF03 | 055 | 50 | 0 |  | 3102737 | Z2 | DT | P03 | O | A3 | EREC | 1FLR |

| ID | WBS | Activity | Duration | Start | Finish | Predecessors | Total float | Free float | Resources | Change Order # | NEW ACTIVITY ID | change id | IDDD | CCAD BUILDING(SET) | CCAD PHASE(SET) | CCAD FLOOR(SET) | CCAD ZONE(SET) | CCAD WORK(SET) | CCAD SECTION(SET) | CCAD SERIAL No.(SET) | CCAD Carpark code(SET) | CCAD Carpark district code(set) | CCAD CBS(SET) | CCAD BILL(SET) | CCAD HANDOVER(SET) | CCAD TAG(SET) | CCAD REV(SET) | CCADACF (SET) | FSP CODE | CCAD SSCF | CCAD SUB ZONE MEP(SET) | CCAD CSA | Act Selector % |
| --- | --- | --- | --- | --- | --- | --- | --- | --- | --- | --- | --- | --- | --- | --- | --- | --- | --- | --- | --- | --- | --- | --- | --- | --- | --- | --- | --- | --- | --- | --- | --- | --- | --- |
|  | AP1 | **PARKING AREA ; Zone PA-1** |  | 2011-10-03 | 2012-12-17 |  |  |  |  |  |  |  |  |  |  |  |  |  |  |  |  |  |  |  |  |  |  |  |  |  |  |  |  |
| PP3AP09901C10 |  | PA-P3 ; Prime & 1st coat (Wall & Ceiling) (Parking Area)_PA-1 | 18d | 2011-10-03 | 2011-10-24 | PP1S903371C0, PP1S903372C0 SS, PP1SX03371C0 SS | 65.9d | 0d | CEILING PAINT [3605 h]; WALL PAINT [779 h]; CEILING PAINT [4499 m2]; WALL PAINT [971.5 m2]; Cost | 328 | 956 | CP3PA09901C0 | PP3AP09901C0 | PA | C | P3 | PK | PA | 099 | 01 | PA | N | BILL 2 | B02 | S1 | 01 | R00 | ACF06 | PA-1 | 099 |  |  |  |
| PP3AP21114C10 |  | PA-P3 ; 1st Fix, Fire Fighting system (Parking Area)_PA-1 | 42d | 2011-10-24 | 2011-12-18 | PP3AP09901C10 | 65.9d | 0d | MECHANICAL [402 h]; Cost |  |  | CP3PA21109C0 | PP3AP21114C0 | PA | C | P3 | PK | ME | 211 | 14 | PA | N | BILL 2 | B02 | S1 | 1F | R00 | ACF04 | PA-1 | 211 | 1S | MEP | M1F |
| PP3AP21124C10 |  | PA-P3 ; 2nd Fix, Fire Fighting system (Parking Area)_PA-1 | 42d | 2011-12-18 | 2012-02-07 | PP3AP21114C10 | 239.9d | 190.25d | MECHANICAL [496.8 h]; Cost |  |  | CP3PA21115C0 | PP3AP21124C0 | PA | C | P3 | PK | ME | 211 | 24 | PA | N | BILL 2 | B02 | S1 | 2F | R00 | ACF07 | PA-1 | 211 | 2n | MEP |  |
| PP3AP22015C10 |  | PA-P3 ; 1st Fix, Plumbing / Drainage System (Parking Area)_PA-1 | 42d | 2011-12-18 | 2012-02-07 | PP3AP09901C10, PP3AP21114C10 | 107.9d | 0d | PLUMBING [1078.8 h]; Cost |  |  | CP3PA22001C0 | PP3AP22015C0 | PA | C | P3 | PK | ME | 220 | 15 | PA | N | BILL 2 | B02 | S1 | 1F | R00 | ACF04 | PA-1 | 220 | 1S | MEP | M1F |
| PP3AP22025C10 |  | PA-P3 ; 2nd Fix, Plumbing / Drainage System (Parking Area)_PA-1 | 42d | 2012-02-07 | 2012-03-27 | PP3AP22015C10 | 206.9d | 156.66d | PLUMBING [1078.8 h]; Cost |  |  | CP3PA22011C0 | PP3AP22025C0 | PA | C | P3 | PK | ME | 220 | 25 | PA | N | BILL 2 | B02 | S1 | 2F | R00 | ACF07 | PA-1 | 220 | 2n | MEP |  |
| PP3AP23011C10 |  | PA-P3 ; 1st Fix, CHW / HVAC System (Parking Area)_PA-1 | 42d | 2012-02-07 | 2012-03-27 | PP3AP22015C10 SS, PP3AP09901C10, PP3AP22015C10 | 107.9d | 0d | MECHANICAL [2788.8 h]; Cost |  |  | CP3PA23001C0 | PP3AP23011C0 | PA | C | P3 | PK | ME | 230 | 11 | PA | N | BILL 2 | B02 | S1 | 1F | R00 | ACF04 | PA-1 | 230 | 1S | MEP | M1F |
| PP3AP23021C10 |  | PA-P3 ; 2nd Fix, CHW / HVAC System (Parking Area)_PA-1 | 42d | 2012-03-27 | 2012-05-15 | PP3AP23011C10 | 173.9d | 124.25d | MECHANICAL [2788.8 h]; Cost |  |  | CP3PA23011C0 | PP3AP23021C0 | PA | C | P3 | PK | ME | 230 | 21 | PA | N | BILL 2 | B02 | S1 | 2F | R00 | ACF07 | PA-1 | 230 | 2n | MEP |  |
| PP3AP26012C10 |  | PA-P3 ; 1st Fix, Electrical System (Parking Area)_PA-1 | 42d | 2012-03-27 | 2012-05-15 | PP3AP22015C10 SS, PP3AP09901C10, PP3AP23011C10 | 107.9d | 0d | ELECTRICAL [2594.4 h]; Cost |  |  | CP3PA26001C0 | PP3AP26012C0 | PA | C | P3 | PK | ME | 260 | 12 | PA | N | BILL 2 | B02 | S1 | 1F | R00 | ACF04 | PA-1 | 260 | 1S | MEP | M1F |
| PP3AP26022C10 |  | PA-P3 ; 2nd Fix, Electrical System (Parking Area)_PA-1 | 42d | 2012-05-15 | 2012-07-04 | PP3AP26012C10 | 140.9d | 91.25d | ELECTRICAL [2594.4 h]; Cost |  |  | CP3PA26005C0 | PP3AP26022C0 | PA | C | P3 | PK | ME | 260 | 22 | PA | N | BILL 2 | B02 | S1 | 2F | R00 | ACF07 | PA-1 | 260 | 2n | MEP |  |
| PP3AP27013C10 |  | PA-P3 ; 1st Fix, ELV system (Parking Area)_PA-1 | 42d | 2012-05-15 | 2012-07-04 | PP3AP26012C10 SS, PP3AP09901C10, PP3AP26012C10 | 107.9d | 0d | ELECTRICAL [422.4 h]; Cost |  |  | CP3PA27010C0 | PP3AP27013C0 | PA | C | P3 | PK | ME | 270 | 13 | PA | N | BILL 2 | B02 | S1 | 1F | R00 | ACF04 | PA-1 | 270 | 1S | MEP | M1F |
| PP3AP27023C10 |  | PA-P3 ; 2nd Fix, ELV system (Parking Area)_PA-1 | 42d | 2012-07-04 | 2012-08-25 | PP3AP27013C10 | 107.9d | 58.25d | ELECTRICAL [422.4 h]; Cost |  |  | CP3PA27020C0 | PP3AP27023C0 | PA | C | P3 | PK | ME | 270 | 23 | PA | N | BILL 2 | B02 | S1 | 2F | R00 | ACF07 | PA-1 | 270 | 2n | MEP |  |
| PP3AP09902C10 |  | PA-P3 ; 2nd coat (Wall & Ceiling) (Parking Area)_PA-1 | 9d | 2012-09-09 | 2012-09-19 | PP3AP09901C10, PP1S103331C460, PP1S103331C470, PP1S103331C450, PP1S903371C10, PP1SX03371C10, PP1SX03373C10 | 49.65d | 0d | CEILING PAINT [1942 h]; WALL PAINT [420 h]; CEILING PAINT [2422.5 m2]; WALL PAINT [523 m2]; Cost | 329 | 957 | CP3PA09903C0 | PP3AP09902C0 | PA | C | P3 | PK | PA | 099 | 02 | PA | N | BILL 2 | B02 | S1 | 02 | R00 | ACF06 | PA-1 | 099 |  |  |  |
| PP3AP21113C10 |  | PA-P3 ; Final Fix, Fire Fighting system (Parking Area)_PA-1 | 9d | 2012-09-19 | 2012-09-30 | PP3AP09902C10, PP3AP21124C10, PP1S103331C460, PP1S103331C470, PP1S103331C450, PP1S903371C10, PP1SX03371C10, PP1SX03373C10, PP2AP21113C10 SS | 49.65d | 0d | MECHANICAL [402 h]; Cost |  |  | CP3PA21113C0 | PP3AP21113C0 | PA | C | P3 | PK | ME | 211 | 13 | PA | N | BILL 2 | B02 | S1 | FF | R00 | ACF07 | PA-1 | 211 | FF | MEP |  |
| PP3AP22011C10 |  | PA-P3 ; Final Fix, Drainage System (Parking Area)_PA-1 | 9d | 2012-09-30 | 2012-10-10 | PP3AP09902C10, PP3AP22025C10, PP1S103331C460, PP1S103331C470, PP1S103331C450, PP1S903371C10, PP1SX03371C10, PP1SX03373C10, PP2AP21113C10 SS, PP3AP21113C10 | 49.65d | 0d | PLUMBING [1078.8 h]; Cost |  |  | CP3PA22011C0 | PP3AP22011C0 | PA | C | P3 | PK | ME | 220 | 11 | PA | N | BILL 2 | B02 | S1 | FF | R00 | ACF07 | PA-1 | 220 | FF | MEP |  |
| PP3AP23019C10 |  | PA-P3 ; Final Fix, CHW / HVAC System (Parking Area)_PA-1 | 9d | 2012-10-10 | 2012-10-21 | PP3AP09902C10, PP3AP23021C10, PP1S103331C460, PP1S103331C470, PP1S103331C450, PP1S903371C10, PP1SX03371C10, PP1SX03373C10, PP2AP21113C10 SS, PP3AP22011C10 | 49.65d | 0d | MECHANICAL [2918.4 h]; Cost |  |  | CP3PA23019C0 | PP3AP23019C0 | PA | C | P3 | PK | ME | 230 | 19 | PA | N | BILL 2 | B02 | S1 | FF | R00 | ACF07 | PA-1 | 230 | FF | MEP |  |
| PP3AP26017C10 |  | PA-P3 ; Final Fix, Electrical System (Parking Area)_PA-1 | 9d | 2012-10-21 | 2012-11-03 | PP3AP09902C10, PP3AP26022C10, PP1S103331C460, PP1S103331C470, PP1S103331C450, PP1S903371C10, PP1SX03371C10, PP1SX03373C10, PP2AP21113C10 SS, PP3AP23019C10 | 49.65d | 0d | ELECTRICAL [2781.6 h]; Cost |  |  | CP3PA26017C0 | PP3AP26017C0 | PA | C | P3 | PK | ME | 260 | 17 | PA | N | BILL 2 | B02 | S1 | FF | R00 | ACF07 | PA-1 | 260 | FF | MEP |  |
| PP3AP27030C10 |  | PA-P3 ; Final Fix, ELV system (Parking Area)_PA-1 | 9d | 2012-11-03 | 2012-11-13 | PP3AP09902C10, PP3AP27023C10, PP1S103331C460, PP1S103331C470, PP1S103331C450, PP1S903371C10, PP1SX03371C10, PP1SX03373C10, PP2AP21113C10 SS, PP3AP26017C10 | 49.65d | 0d | ELECTRICAL [453.6 h]; Cost |  |  | CP3PA27030C0 | PP3AP27030C0 | PA | C | P3 | PK | ME | 270 | 30 | PA | N | BILL 2 | B02 | S1 | FF | R00 | ACF07 | PA-1 | 270 | FF | MEP |  |
| PP3AP09903C10 |  | PA-P3 ; Concrete Sealer (Floor) (Parking Area)_PA-1 | 9d | 2012-11-13 | 2012-11-25 | PP3AP21113C10, PP3AP22011C10, PP3AP23019C10, PP3AP26017C10, PP3AP27030C10, PP1S103331C460, PP1S103331C470, PP1S103331C450, PP1S903371C10, PP1SX03371C10, PP1SX03373C10, PP2AP21113C10 SS | 49.65d | 0d | ASSORTED FLOOR FINISH [6056 h]; ASSORTED FLOOR FINISH [3363 m2]; Cost |  |  | AP3PK09903C0 | PP3AP09903C0 | PA | C | P3 | PK | FF | 096 | 03 | PA | N | BILL 2 | B02 | S1 | 05 | R00 | ACF06 | PA-1 | CS |  |  |  |
| PP3AP05509C10 |  | PA-P3 ; Grill & Louvers (Parking Area)_PA-1 | 9d | 2012-11-25 | 2012-12-06 | PP3AP09903C10, PP1S103331C460, PP1S103331C470, PP1S103331C450, PP1S903371C10, PP1SX03371C10, PP1SX03373C10, PP2AP21113C10 SS | 58.65d | 32.34d | SECONDARY STEEL [466 h]; Cost | 328 | 956 | CP3PA09901C0 | PP3AP09901C0 | PA | C | P3 | PK | SW | 055 | 01 | PA | N | BILL 2 | B02 | S1 | 02 | R00 | ACF03 | PA-1 | 056 |  |  |  |
| PP3AP11006C10 |  | PA-P3 ; Wall Protection (WP, CG, WG, FCG) (Parking Area)_PA-1 | 9d | 2012-11-25 | 2012-12-06 | PP3AP09903C10, PP1S103331C460, PP1S103331C470, PP1S103331C450, PP1S903371C10, PP1SX03371C10, PP1SX03373C10, PP2AP21113C10 SS | 49.65d | 0d | FF&E [117 h]; Cost | 326 | 1001 | CP3PA11001C0 | PP3AP11006C0 | PA | C | P3 | PK | WF | 097 | 06 | PA | N | BILL 2 | B02 | S1 | 03 | R00 | ACF08 | PA-1 | 097 |  |  |  |
| PP3AP11004C10 |  | PA-P3 ; Floor Marking & Signage (Parking Area)_PA-1 | 9d | 2012-12-06 | 2012-12-17 | PP3AP09903C10, PP3AP11006C10, PP1S103331C460, PP1S103331C470, PP1S103331C450, PP1S903371C10, PP1SX03371C10, PP1SX03373C10, PP2AP21113C10 SS | 49.65d | 23.34d | SIGNAGES [1401 h]; SIGNAGES [195 no]; Cost |  |  | AP3PK11004C0 | PP3AP11004C0 | PA | C | P3 | PK | SA | 110 | 04 | PA | N | BILL 2 | B02 | S1 | 09 | R00 | ACF08 | PA-1 | c |  |  |  |
|  | AP2 | **PARKING AREA ; Zone PA-2** |  | 2011-12-18 | 2012-12-17 |  |  |  |  |  |  |  |  |  |  |  |  |  |  |  |  |  |  |  |  |  |  |  |  |  |  |  |  |
| PP3AP09901C20 |  | PA-P3 ; Prime & 1st coat (Wall & Ceiling) (Parking Area)_PA-2 | 18d | 2011-12-18 | 2012-01-09 | PP1SX03372C0 SS, PP1SX03373C0 SS | 47.31d | 0d | CEILING PAINT [3605 h]; WALL PAINT [779 h]; CEILING PAINT [4499 m2]; WALL PAINT [971.5 m2]; Cost | 328 | 956 | CP3PA09901C0 | PP3AP09901C0 | PA | C | P3 | PK | PA | 099 | 01 | PA | N | BILL 2 | B02 | S1 | 01 | R00 | ACF06 | PA-2 | 099 |  |  |  |
| PP3AP21114C20 |  | PA-P3 ; 1st Fix, Fire Fighting system (Parking Area)_PA-2 | 36d | 2012-01-09 | 2012-02-21 | PP3AP09901C20 | 47.31d | 0d | MECHANICAL [402 h]; Cost |  |  | CP3PA21109C0 | PP3AP21114C0 | PA | C | P3 | PK | ME | 211 | 14 | PA | N | BILL 2 | B02 | S1 | 1F | R00 | ACF04 | PA-2 | 211 | 1S | MEP | M1F |
| PP3AP21124C20 |  | PA-P3 ; 2nd Fix, Fire Fighting system (Parking Area)_PA-2 | 36d | 2012-02-21 | 2012-04-03 | PP3AP21114C20 | 191.31d | 141.66d | MECHANICAL [496.8 h]; Cost |  |  | CP3PA21115C0 | PP3AP21124C0 | PA | C | P3 | PK | ME | 211 | 24 | PA | N | BILL 2 | B02 | S1 | 2F | R00 | ACF07 | PA-2 | 211 | 2n | MEP |  |
| PP3AP22015C20 |  | PA-P3 ; 1st Fix, Plumbing / Drainage System (Parking Area)_PA-2 | 36d | 2012-02-21 | 2012-04-03 | PP3AP21114C20 SS, PP3AP09901C20, PP3AP21114C20 | 83.31d | 0d | PLUMBING [1078.8 h]; Cost |  |  | CP3PA22001C0 | PP3AP22015C0 | PA | C | P3 | PK | ME | 220 | 15 | PA | N | BILL 2 | B02 | S1 | 1F | R00 | ACF04 | PA-2 | 220 | 1S | MEP | M1F |
| PP3AP22025C20 |  | PA-P3 ; 2nd Fix, Plumbing / Drainage System (Parking Area)_PA-2 | 36d | 2012-04-03 | 2012-05-15 | PP3AP22015C20 | 164.31d | 114.07d | PLUMBING [1078.8 h]; Cost |  |  | CP3PA22011C0 | PP3AP22025C0 | PA | C | P3 | PK | ME | 220 | 25 | PA | N | BILL 2 | B02 | S1 | 2F | R00 | ACF07 | PA-2 | 220 | 2n | MEP |  |
| PP3AP23011C20 |  | PA-P3 ; 1st Fix, CHW / HVAC System (Parking Area)_PA-2 | 36d | 2012-04-03 | 2012-05-15 | PP3AP22015C20 SS, PP3AP09901C20, PP3AP22015C20 | 83.31d | 0d | MECHANICAL [2788.8 h]; Cost |  |  | CP3PA23001C0 | PP3AP23011C0 | PA | C | P3 | PK | ME | 230 | 11 | PA | N | BILL 2 | B02 | S1 | 1F | R00 | ACF04 | PA-2 | 230 | 1S | MEP | M1F |
| PP3AP23021C20 |  | PA-P3 ; 2nd Fix, CHW / HVAC System (Parking Area)_PA-2 | 36d | 2012-05-15 | 2012-06-27 | PP3AP23011C20 | 137.31d | 87.66d | MECHANICAL [2788.8 h]; Cost |  |  | CP3PA23011C0 | PP3AP23021C0 | PA | C | P3 | PK | ME | 230 | 21 | PA | N | BILL 2 | B02 | S1 | 2F | R00 | ACF07 | PA-2 | 230 | 2n | MEP |  |
| PP3AP26012C20 |  | PA-P3 ; 1st Fix, Electrical System (Parking Area)_PA-2 | 36d | 2012-05-15 | 2012-06-27 | PP3AP21114C20 SS, PP3AP22015C20 SS, PP3AP09901C20, PP3AP23011C20 | 83.31d | 0d | ELECTRICAL [2594.4 h]; Cost |  |  | CP3PA26001C0 | PP3AP26012C0 | PA | C | P3 | PK | ME | 260 | 12 | PA | N | BILL 2 | B02 | S1 | 1F | R00 | ACF04 | PA-2 | 260 | 1S | MEP | M1F |
| PP3AP26022C20 |  | PA-P3 ; 2nd Fix, Electrical System (Parking Area)_PA-2 | 36d | 2012-06-27 | 2012-08-08 | PP3AP26012C20 | 110.31d | 60.66d | ELECTRICAL [2594.4 h]; Cost |  |  | CP3PA26005C0 | PP3AP26022C0 | PA | C | P3 | PK | ME | 260 | 22 | PA | N | BILL 2 | B02 | S1 | 2F | R00 | ACF07 | PA-2 | 260 | 2n | MEP |  |
| PP3AP27013C20 |  | PA-P3 ; 1st Fix, ELV system (Parking Area)_PA-2 | 36d | 2012-06-27 | 2012-08-08 | PP3AP26012C20 SS, PP3AP09901C20, PP3AP26012C20 | 83.31d | 0d | ELECTRICAL [422.4 h]; Cost |  |  | CP3PA27010C0 | PP3AP27013C0 | PA | C | P3 | PK | ME | 270 | 13 | PA | N | BILL 2 | B02 | S1 | 1F | R00 | ACF04 | PA-2 | 270 | 1S | MEP | M1F |
| PP3AP27023C20 |  | PA-P3 ; 2nd Fix, ELV system (Parking Area)_PA-2 | 36d | 2012-08-08 | 2012-09-22 | PP3AP27013C20 | 83.31d | 33.66d | ELECTRICAL [422.4 h]; Cost |  |  | CP3PA27020C0 | PP3AP27023C0 | PA | C | P3 | PK | ME | 270 | 23 | PA | N | BILL 2 | B02 | S1 | 2F | R00 | ACF07 | PA-2 | 270 | 2n | MEP |  |
| PP3AP09902C20 |  | PA-P3 ; 2nd coat (Wall & Ceiling) (Parking Area)_PA-2 | 9d | 2012-09-09 | 2012-09-19 | PP3AP09901C20, PP1S103331C460, PP1S103331C470, PP1S103331C450, PP1S903371C10, PP1SX03371C10, PP1SX03373C10 | 49.65d | 0d | CEILING PAINT [1942 h]; WALL PAINT [420 h]; CEILING PAINT [2422.5 m2]; WALL PAINT [523 m2]; Cost | 329 | 957 | CP3PA09903C0 | PP3AP09902C0 | PA | C | P3 | PK | PA | 099 | 02 | PA | N | BILL 2 | B02 | S1 | 02 | R00 | ACF06 | PA-2 | 099 |  |  |  |
| PP3AP21113C20 |  | PA-P3 ; Final Fix, Fire Fighting system (Parking Area)_PA-2 | 9d | 2012-09-19 | 2012-09-30 | PP3AP09902C20, PP3AP21124C20, PP1S103331C460, PP1S103331C470, PP1S103331C450, PP1S903371C10, PP1SX03371C10, PP1SX03373C10, PP2AP21113C10 SS | 49.65d | 0d | MECHANICAL [402 h]; Cost |  |  | CP3PA21113C0 | PP3AP21113C0 | PA | C | P3 | PK | ME | 211 | 13 | PA | N | BILL 2 | B02 | S1 | FF | R00 | ACF07 | PA-2 | 211 | FF | MEP |  |
| PP3AP22011C20 |  | PA-P3 ; Final Fix, Drainage System (Parking Area)_PA-2 | 9d | 2012-09-30 | 2012-10-10 | PP3AP09902C20, PP3AP22025C20, PP1S103331C460, PP1S103331C470, PP1S103331C450, PP1S903371C10, PP1SX03371C10, PP1SX03373C10, PP2AP21113C10 SS, PP3AP21113C20 | 49.65d | 0d | PLUMBING [1078.8 h]; Cost |  |  | CP3PA22011C0 | PP3AP22011C0 | PA | C | P3 | PK | ME | 220 | 11 | PA | N | BILL 2 | B02 | S1 | FF | R00 | ACF07 | PA-2 | 220 | FF | MEP |  |
| PP3AP23019C20 |  | PA-P3 ; Final Fix, CHW / HVAC System (Parking Area)_PA-2 | 9d | 2012-10-10 | 2012-10-21 | PP3AP09902C20, PP3AP23021C20, PP1S103331C460, PP1S103331C470, PP1S103331C450, PP1S903371C10, PP1SX03371C10, PP1SX03373C10, PP2AP21113C10 SS, PP3AP22011C20 | 49.65d | 0d | MECHANICAL [2918.4 h]; Cost |  |  | CP3PA23019C0 | PP3AP23019C0 | PA | C | P3 | PK | ME | 230 | 19 | PA | N | BILL 2 | B02 | S1 | FF | R00 | ACF07 | PA-2 | 230 | FF | MEP |  |
| PP3AP26017C20 |  | PA-P3 ; Final Fix, Electrical System (Parking Area)_PA-2 | 9d | 2012-10-21 | 2012-11-03 | PP3AP09902C20, PP3AP26022C20, PP1S103331C460, PP1S103331C470, PP1S103331C450, PP1S903371C10, PP1SX03371C10, PP1SX03373C10, PP2AP21113C10 SS, PP3AP23019C20 | 49.65d | 0d | ELECTRICAL [2781.6 h]; Cost |  |  | CP3PA26017C0 | PP3AP26017C0 | PA | C | P3 | PK | ME | 260 | 17 | PA | N | BILL 2 | B02 | S1 | FF | R00 | ACF07 | PA-2 | 260 | FF | MEP |  |
| PP3AP27030C20 |  | PA-P3 ; Final Fix, ELV system (Parking Area)_PA-2 | 9d | 2012-11-03 | 2012-11-13 | PP3AP09902C20, PP3AP27023C20, PP3AP27023C20 FF, PP1S103331C460, PP1S103331C470, PP1S103331C450, PP1S903371C10, PP1SX03371C10, PP1SX03373C10, PP2AP21113C10 SS, PP3AP26017C20 | 49.65d | 0d | ELECTRICAL [453.6 h]; Cost |  |  | CP3PA27030C0 | PP3AP27030C0 | PA | C | P3 | PK | ME | 270 | 30 | PA | N | BILL 2 | B02 | S1 | FF | R00 | ACF07 | PA-2 | 270 | FF | MEP |  |
| PP3AP09903C20 |  | PA-P3 ; Concrete Sealer (Floor) (Parking Area)_PA-2 | 9d | 2012-11-13 | 2012-11-25 | PP3AP21113C20, PP3AP22011C20, PP3AP23019C20, PP3AP26017C20, PP3AP27030C20, PP1S103331C460, PP1S103331C470, PP1S103331C450, PP1S903371C10, PP1SX03371C10, PP1SX03373C10, PP2AP21113C10 SS | 49.65d | 0d | ASSORTED FLOOR FINISH [6056 h]; ASSORTED FLOOR FINISH [3363 m2]; Cost |  |  | AP3PK09903C0 | PP3AP09903C0 | PA | C | P3 | PK | FF | 096 | 03 | PA | N | BILL 2 | B02 | S1 | 05 | R00 | ACF06 | PA-2 | CS |  |  |  |
| PP3AP05509C20 |  | PA-P3 ; Grill & Louvers (Parking Area)_PA-2 | 9d | 2012-11-25 | 2012-12-06 | PP3AP09903C20, PP1S103331C460, PP1S103331C470, PP1S103331C450, PP1S903371C10, PP1SX03371C10, PP1SX03373C10, PP2AP21113C10 SS | 58.65d | 32.34d | SECONDARY STEEL [466 h]; Cost | 328 | 956 | CP3PA09901C0 | PP3AP09901C0 | PA | C | P3 | PK | SW | 055 | 01 | PA | N | BILL 2 | B02 | S1 | 02 | R00 | ACF03 | PA-2 | 056 |  |  |  |
| PP3AP11006C20 |  | PA-P3 ; Wall Protection (WP, CG, WG, FCG) (Parking Area)_PA-2 | 9d | 2012-11-25 | 2012-12-06 | PP3AP09903C20, PP1S103331C460, PP1S103331C470, PP1S103331C450, PP1S903371C10, PP1SX03371C10, PP1SX03373C10, PP2AP21113C10 SS | 49.65d | 0d | FF&E [117 h]; Cost | 326 | 1001 | CP3PA11001C0 | PP3AP11006C0 | PA | C | P3 | PK | WF | 097 | 06 | PA | N | BILL 2 | B02 | S1 | 03 | R00 | ACF08 | PA-2 | 097 |  |  |  |
| PP3AP11004C20 |  | PA-P3 ; Floor Marking & Signage (Parking Area)_PA-2 | 9d | 2012-12-06 | 2012-12-17 | PP3AP09903C20, PP3AP11006C20, PP1S103331C460, PP1S103331C470, PP1S103331C450, PP1S903371C10, PP1SX03371C10, PP1SX03373C10, PP2AP21113C10 SS | 49.65d | 23.34d | SIGNAGES [1401 h]; SIGNAGES [195 no]; Cost |  |  | AP3PK11004C0 | PP3AP11004C0 | PA | C | P3 | PK | SA | 110 | 04 | PA | N | BILL 2 | B02 | S1 | 09 | R00 | ACF08 | PA-2 | c |  |  |  |

| ID | WBS | Activity | Duration | Start | Finish | Predecessors | Total float | Free float | Resources | NEW ACTIVITY ID | change id | IDDD | CCAD BUILDING(SET) | CCAD PHASE(SET) | CCAD FLOOR(SET) | CCAD ZONE(SET) | CCAD WORK(SET) | CCAD SECTION(SET) | CCAD SERIAL No.(SET) | CCAD Carpark code(SET) | CCAD Carpark district code(set) | CCAD CBS(SET) | CCAD BILL(SET) | CCAD HANDOVER(SET) | CCAD TAG(SET) | CCAD REV(SET) | CCADACF (SET) | FSP CODE | CCAD SSCF | Change Order # | CCAD CSA | Act Selector % | CCAD SUB ZONE MEP(SET) | CCAD DIVISION(SET) | CCAD MEQ |
| --- | --- | --- | --- | --- | --- | --- | --- | --- | --- | --- | --- | --- | --- | --- | --- | --- | --- | --- | --- | --- | --- | --- | --- | --- | --- | --- | --- | --- | --- | --- | --- | --- | --- | --- | --- |
|  | AE2 | **ELECTRICAL ROOMS (2 NOS.) ; Zone PA-2** |  | 2012-01-12 | 2012-12-06 |  |  |  |  |  |  |  |  |  |  |  |  |  |  |  |  |  |  |  |  |  |  |  |  |  |  |  |  |  |  |
| PP3AE09903C0 |  | PA-P3 ; Ceiling Prime & 1st coat (Elec RM)_PA-2 | 18d | 2012-01-12 | 2012-02-02 | PP1SX03372C0, PP1SX03373C0 | 42.31d | 0d | ASSORTED CEILING FINISH [10 h]; Cost | 1544 | CP2ME09905C0 | PP3AE09903C0 | PA | C | P3 | ER | PA | 099 | 03 | PA | N | BILL 2 | B02 | S1 | 01 | R00 | ACF06 | PA-2 | 099 |  |  |  |  |  |  |
| PP3AE04001C0 |  | PA-P3 ; Block Wall Works (Elec RM)_PA-2 | 30d | 2012-02-02 | 2012-03-10 | PP3AE09903C0 | 64.31d | 0d | BLOCKWORKS [322 h]; BLOCKWORKS [92 m2]; Cost |  | AP3ER04001C0 | PP3AE04001C0 | PA | C | P3 | ER | BL | 040 | 01 | PA | N | BILL 2 | B02 | S1 | BL | R00 | ACF06 | PA-2 | 040 |  |  |  |  |  |  |
| PP3AE09201C0 |  | PA-P3 ; Metal Studs (Elec RM)_PA-2 | 10d | 2012-03-10 | 2012-03-21 | PP3AE04001C0 | 227.31d | 0d | PARTITIONS [29 h]; PARTITIONS [4 m]; Cost | 1372 | CP2ME09201C0 | PP3AE09201C0 | PA | C | P3 | ER | PT | 092 | 01 | PA | N | BILL 2 | B02 | S1 | 1F | R00 | ACF06 | PA-2 | 092 | 313 | GP | PMS |  |  |  |
| PP3AE23001C0 |  | PA-P3 ; 1st Fix, Inst. of Supports for MEP (Elec RM)_PA-2 | 12d | 2012-03-10 | 2012-03-24 | PP3AE04001C0 | 64.31d | 0d | MECHANICAL [625.2 h]; Cost |  | CP2ME23010C0 | PP3AE23001C0 | PA | C | P3 | ER | ME | 230 | 01 | PA | N | BILL 2 | B02 | S1 | 1F | R00 | ACF04 | PA-2 | 230 |  | MEP | M1F | 1S |  |  |
| PP3AE08102C0 |  | PA-P3 ; Metal Door Frames (Elec RM)_PA-2 | 12d | 2012-03-21 | 2012-04-04 | PP3AE09201C0, GNHE08101C0 | 236.31d | 137.66d | METAL DOORS [29 h]; Cost | 1374 | CP2ME08101C0 | PP3AE08102C0 | PA | C | P3 | ER | DO | 081 | 02 | PA | N | BILL 2 | B02 | S1 | DF | R00 | ACF06 | PA-2 | 081 | 316 |  |  |  | 08 |  |
| PP3AE09202C0 |  | PA-P3 ; Partitions 1st face (Elec RM)_PA-2 | 18d | 2012-03-24 | 2012-04-14 | PP3AE09201C0 SS+12d | 227.31d | 129.66d | PARTITIONS [4 m]; PARTITIONS [16 h]; Cost | 1373 | CP2ME09203C0 | PP3AE09202C0 | PA | C | P3 | ER | PT | 092 | 02 | PA | N | BILL 2 | B02 | S1 | 2F | R00 | ACF06 | PA-2 | 092 | 314 | GP | P1F |  |  |  |
| PP3AE23002C0 |  | PA-P3 ; 1st Fix, Inst of CHW pipe (Elec RM)_PA-2 | 42d | 2012-03-24 | 2012-05-12 | PP3AE23001C0, PP3AE04001C0 | 64.31d | 0d | MECHANICAL [3097.2 h]; Cost |  | CP2ME23012C0 | PP3AE23002C0 | PA | C | P3 | ER | ME | 230 | 02 | PA | N | BILL 2 | B02 | S1 | 1F | R00 | ACF04 | PA-2 | 230 |  | MEP | M1F | 1S |  |  |
| PP3AE23003C0 |  | PA-P3 ; 1st Fix, Inst of Ducting (Elec RM)_PA-2 | 42d | 2012-03-24 | 2012-05-12 | PP3AE23002C0 SS, PP3AE04001C0, PP3AE23001C0 | 64.31d | 0d | MECHANICAL [3948 h]; Cost |  | CP2ME23014C0 | PP3AE23003C0 | PA | C | P3 | ER | ME | 230 | 03 | PA | N | BILL 2 | B02 | S1 | 1F | R00 | ACF04 | PA-2 | 230 |  | MEP | M1F | 1S |  |  |
| PP3AE09902C0 |  | PA-P3 ; Wall Prime & 1st coat (Elec RM)_PA-2 | 18d | 2012-03-27 | 2012-04-17 | PP3AE04001C0 FS+15d | 164.31d | 0d | WALL PAINT [305 h]; WALL PAINT [379 m2]; Cost | 1378 | CP2ME09901C0 | PP3AE09902C0 | PA | C | P3 | ER | PA | 099 | 02 | PA | N | BILL 2 | B02 | S1 | 01 | R00 | ACF06 | PA-2 | 099 | 328 |  |  |  |  |  |
| PP3AE08106C0 |  | PA-P3 ; Access Floor (Elec RM)_PA-2 | 12d | 2012-04-17 | 2012-05-01 | PP3AE09902C0 | 164.31d | 0d | ASSORTED FLOOR FINISH [72 h]; ASSORTED FLOOR FINISH [40 m2]; Cost | 1375 | CP2ER08105C0 |  | PA | C | P3 | ER | FF | 096 | 06 | PA | N | BILL 2 | B02 | S1 | 04 | R00 | ACF06 | PA-2 | AF | 317 |  |  |  | 08 |  |
| PP3AE23008C0 |  | PA-P3 ; 2nd Fix, Inst of Equipment (FCU,FAN,PUMP) (Elec RM)_PA-2 | 42d | 2012-05-01 | 2012-06-20 | PP3AE26009C0 SS | 164.31d | 72.66d | MECHANICAL [2184 h]; Cost |  | CP2ME23022C0 | PP3AE23008C0 | PA | C | P3 | ER | ME | 230 | 08 | PA | N | BILL 2 | B02 | S1 | 2F | R00 | ACF04 | PA-2 | 230 |  | MEP |  | 2n |  | H |
| PP3AE26009C0 |  | PA-P3 ; 2nd Fix, Inst of Equipment (DB, TR, SG) (Elec RM)_PA-2 | 42d | 2012-05-01 | 2012-06-20 | PP3AE08106C0 | 164.31d | 0d | ELECTRICAL [1281.6 h]; Cost |  | CP2ME26024C0 | PP3AE26009C0 | PA | C | P3 | ER | ME | 260 | 09 | PA | N | BILL 2 | B02 | S1 | 2F | R00 | ACF04 | PA-2 | 260 |  | MEP |  | 2n |  | E |
| PP3AE23004C0 |  | PA-P3 ; 1st Fix, Inst of VCD's/FD's (Elec RM)_PA-2 | 42d | 2012-05-12 | 2012-07-01 | PP3AE23003C0, PP3AE04001C0, PP3AE23001C0 | 64.31d | 0d | MECHANICAL [1428 h]; Cost |  | CP2ME23016C0 | PP3AE23004C0 | PA | C | P3 | ER | ME | 230 | 04 | PA | N | BILL 2 | B02 | S1 | 1F | R00 | ACF04 | PA-2 | 230 |  | MEP | M1F | 1S |  |  |
| PP3AE23007C0 |  | PA-P3 ; 2nd Fix, Inst of VAV'S CHW connection (Elec RM)_PA-2 | 42d | 2012-05-12 | 2012-07-01 | PP3AE23003C0 | 106.31d | 42d | MECHANICAL [50.4 h]; Cost |  | CP2ME23020C0 | PP3AE23007C0 | PA | C | P3 | ER | ME | 230 | 07 | PA | N | BILL 2 | B02 | S1 | 2F | R00 | ACF07 | PA-2 | 230 |  | MEP |  | 2n |  |  |
| PP3AE23010C0 |  | PA-P3 ; 2nd Fix, Insulation of CHW pipe & Duct (Elec RM)_PA-2 | 42d | 2012-05-12 | 2012-07-01 | PP3AE23003C0 | 106.31d | 42d | MECHANICAL [3702 h]; Cost |  | CP2ME23026C0 | PP3AE23010C0 | PA | C | P3 | ER | ME | 230 | 10 | PA | N | BILL 2 | B02 | S1 | 2F | R00 | ACF07 | PA-2 | 230 |  | MEP |  | 2n |  |  |
| PP3AE26001C0 |  | PA-P3 ; 1st Fix, Inst of Trunking/Conduiting (Elec RM)_PA-2 | 42d | 2012-05-12 | 2012-07-01 | PP3AE04001C0, PP3AE23001C0, PP3AE23003C0 | 98.31d | 0d | ELECTRICAL [192 h]; Cost |  | CP2ME26010C0 | PP3AE26001C0 | PA | C | P3 | ER | ME | 260 | 01 | PA | N | BILL 2 | B02 | S1 | 1F | R00 | ACF04 | PA-2 | 260 |  | MEP | M1F | 1S |  |  |
| PP3AE26002C0 |  | PA-P3 ; 1st Fix, Inst of Cable Tray (Elec RM)_PA-2 | 42d | 2012-05-12 | 2012-07-01 | PP3AE27002C0 SS, PP3AE04001C0, PP3AE23001C0, PP3AE23003C0 | 98.31d | 0d | ELECTRICAL [63.6 h]; Cost |  | CP2ME26012C0 | PP3AE26002C0 | PA | C | P3 | ER | ME | 260 | 02 | PA | N | BILL 2 | B02 | S1 | 1F | R00 | ACF04 | PA-2 | 260 |  | MEP | M1F | 1S |  |  |
| PP3AE27002C0 |  | PA-P3 ; 1st Fix, Inst of Trunking for ELV system (Elec RM)_PA-2 | 42d | 2012-05-12 | 2012-07-01 | PP3AE26001C0 SS, PP3AE04001C0, PP3AE23001C0 | 98.31d | 0d | ELECTRICAL [535.2 h]; Cost |  | CP2ME27010C0 | PP3AE27002C0 | PA | C | P3 | ER | ME | 270 | 02 | PA | N | BILL 2 | B02 | S1 | 1F | R00 | ACF04 | PA-2 | 270 |  | MEP | M1F | 1S |  |  |
| PP3AE23009C0 |  | PA-P3 ; 2nd Fix, Inst of VCD's/FD's (Elec RM)_PA-2 | 42d | 2012-07-01 | 2012-08-21 | PP3AE23003C0, PP3AE23004C0 | 64.31d | 0d | MECHANICAL [1168.8 h]; Cost |  | CP2ME23024C0 | PP3AE23009C0 | PA | C | P3 | ER | ME | 230 | 09 | PA | N | BILL 2 | B02 | S1 | 2F | R00 | ACF07 | PA-2 | 230 |  | MEP |  | 2n |  |  |
| PP3AE26007C0 |  | PA-P3 ; 2nd Fix, Wiring for Power/Lighting/Emergency (Elec RM)_PA-2 | 42d | 2012-07-01 | 2012-08-21 | PP3AE26001C0 | 98.31d | 39.66d | ELECTRICAL [452.4 h]; Cost |  | CP2ME26020C0 | PP3AE26007C0 | PA | C | P3 | ER | ME | 260 | 07 | PA | N | BILL 2 | B02 | S1 | 2F | R00 | ACF07 | PA-2 | 260 |  | MEP |  | 2n |  |  |
| PP3AE26008C0 |  | PA-P3 ; 2nd Fix, Cable Pulling (Elec RM)_PA-2 | 42d | 2012-07-01 | 2012-08-21 | PP3AE26002C0 | 98.31d | 39.66d | ELECTRICAL [4096.8 h]; Cost |  | CP2ME26022C0 | PP3AE26008C0 | PA | C | P3 | ER | ME | 260 | 08 | PA | N | BILL 2 | B02 | S1 | 2F | R00 | ACF07 | PA-2 | 260 |  | MEP |  | 2n |  |  |
| PP3AE27001C0 |  | PA-P3 ; 1st Fix, Wiring/ Cabling work (Elec RM)_PA-2 | 42d | 2012-07-01 | 2012-08-21 | PP3AE27002C0 SS, PP3AE04001C0, PP3AE23001C0, PP3AE26002C0 | 98.31d | 39.66d | ELECTRICAL [140.4 h]; Cost |  | CP2ME27012C0 | PP3AE27001C0 | PA | C | P3 | ER | ME | 270 | 01 | PA | N | BILL 2 | B02 | S1 | 1F | R00 | ACF04 | PA-2 | 270 |  | MEP | M1F | 1S |  |  |
| PP3AE09501C0 |  | PA-P3 ; Ceiling Grid and Service Tile (Elec RM)_PA-2 | 16d | 2012-08-21 | 2012-09-09 | PP3AE23002C0, PP3AE23003C0, PP3AE23004C0, PP3AE23007C0, PP3AE23009C0, PP3AE23010C0, PP3AE26001C0, PP3AE26002C0 | 64.31d | 0d | CEILING GRID FOR GYPSUM [1587.62 h]; CEILING GRID FOR GYPSUM [135.74 m2]; Cost | 1408 | CP2ME09501C0 | PP3AE09501C0 | PA | C | P3 | ER | CE | 095 | 01 | PA | N | BILL 2 | B02 | S1 | 01 | R00 | ACF06 | PA-2 | 095 | 323 |  |  |  |  |  |
| PP3AE21104C0 |  | PA-P3 ; 2nd Fix, Inst of Sprinkler droppers (Elec RM)_PA-2 | 42d | 2012-09-09 | 2012-10-30 | PP3AE09501C0 | 119.31d | 100.07d | MECHANICAL [3199.2 h]; Cost |  | CP2ME21120C0 | PP3AE21104C0 | PA | C | P3 | ER | ME | 211 | 04 | PA | N | BILL 2 | B02 | S1 | 2F | R00 | ACF07 | PA-2 | 211 |  | MEP |  | 2n |  |  |
| PP3AE21105C0 |  | PA-P3 ; 2nd Fix, Inst of Zone Control Valve (Elec RM)_PA-2 | 42d | 2012-09-09 | 2012-10-30 | PP3AE09501C0 | 119.31d | 100.07d | MECHANICAL [735.6 h]; Cost |  | CP2ME21124C0 | PP3AE21105C0 | PA | C | P3 | ER | ME | 211 | 05 | PA | N | BILL 2 | B02 | S1 | 2F | R00 | ACF07 | PA-2 | 211 |  | MEP |  | 2n |  |  |
| PP3AE27005C0 |  | PA-P3 ; 2nd Fix, Wiring Droppers (Elec RM)_PA-2 | 42d | 2012-09-09 | 2012-10-30 | PP3AE09501C0 | 119.31d | 100.07d | ELECTRICAL [76.8 h]; Cost |  | CP2ME27022C0 | PP3AE27005C0 | PA | C | P3 | ER | ME | 270 | 05 | PA | N | BILL 2 | B02 | S1 | 2F | R00 | ACF07 | PA-2 | 270 |  | MEP |  | 2n |  |  |
| PP3AE27006C0 |  | PA-P3 ; 2nd Fix, Inst of ELV Equipment (Panels) (Elec RM)_PA-2 | 42d | 2012-09-09 | 2012-10-30 | PP3AE09501C0 | 119.31d | 100.07d | ELECTRICAL [183.6 h]; Cost |  | CP2ME27020C0 | PP3AE27006C0 | PA | C | P3 | ER | ME | 270 | 06 | PA | N | BILL 2 | B02 | S1 | 2F | R00 | ACF04 | PA-2 | 270 |  | MEP |  | 2n |  | E |
| PP3AE05501C0 |  | PA-P3 ; Handrails & balustrade (Elec RM)_PA-2 | 18d | 2012-09-16 | 2012-10-07 | PP3AE09902C0, PP1S103331C460, PP1S103331C470, PP1S103331C450, PP1S903371C10, PP1SX03371C10, PP1SX03373C10, PP2AP21113C10 SS | 106.65d | 80.34d | SECONDARY STEEL [138 h]; Cost |  | CP2ME05501C0 | PP3AE05501C0 | PA | C | P3 | ER | SW | 055 | 01 | PA | N | BILL 2 | B02 | S1 | 01 | R00 | ACF03 | PA-2 | a |  |  |  |  |  |  |
| PP3AE08103C0 |  | PA-P3 ; Metal Doors (Elec RM)_PA-2 | 12d | 2012-09-16 | 2012-09-30 | PP3AE08102C0, PP1S103331C460, PP1S103331C470, PP1S103331C450, PP1S903371C10, PP1SX03371C10, PP1SX03373C10, PP2AP21113C10 SS | 98.65d | 0d | METAL DOORS [30 h]; METAL DOORS [3 no]; Cost | 1375 | CP2ME08105C0 | PP3AE08103C0 | PA | C | P3 | ER | DO | 081 | 03 | PA | N | BILL 2 | B02 | S1 | DR | R00 | ACF06 | PA-2 | 081 | 317 |  |  |  | 08 |  |
| PP3AE09203C0 |  | PA-P3 ; Partitions Closing (Elec RM)_PA-2 | 27d | 2012-09-16 | 2012-10-17 | PAFOA09201C1 FF, PP3AE09202C0, PP3AE08102C0 FF, PP1S103331C460, PP1S103331C470, PP1S103331C450, PP1S903371C10, PP1SX03371C10, PP1SX03373C10, PP2AP21113C10 SS | 97.65d | 71.34d | PARTITIONS [4 m]; PARTITIONS [18 h]; Cost | 1540 | CP2ME09205C0 | PP3AE09203C0 | PA | C | P3 | ER | PT | 092 | 03 | PA | N | BILL 2 | B02 | S1 | FF | R00 | ACF06 | PA-2 | 092 |  | GP | P2F |  |  |  |
| PP3AE09601C0 |  | PA-P3 ; Flooring (Elec RM)_PA-2 | 15d | 2012-09-16 | 2012-10-03 | PP3AE09902C0, PP3AE09903C0, PP3AE23008C0, PP1S103331C460, PP1S103331C470, PP1S103331C450, PP1S903371C10, PP1SX03371C10, PP1SX03373C10, PP2AP21113C10 SS | 91.65d | 0d | ASSORTED FLOOR FINISH [1312 h]; ASSORTED FLOOR FINISH [726 m2]; Cost | 1377 | CP2ME09601C0 | PP3AE09601C0 | PA | C | P3 | ER | FF | 096 | 01 | PA | N | BILL 2 | B02 | S1 | 01 | R00 | ACF06 | PA-2 | FF | 326 |  |  |  |  |  |
| PP3AE09901C0 |  | PA-P3 ; Wall - final Paint (Elec RM)_PA-2 | 12d | 2012-09-16 | 2012-09-30 | PP3AE09902C0, PP1S103331C460, PP1S103331C470, PP1S103331C450, PP1S903371C10, PP1SX03371C10, PP1SX03373C10, PP2AP21113C10 SS | 112.65d | 86.34d | WALL PAINT [164 h]; WALL PAINT [204 m2]; Cost | 1379 | CP2ME09903C0 | PP3AE09901C0 | PA | C | P3 | ER | PA | 099 | 01 | PA | N | BILL 2 | B02 | S1 | 02 | R00 | ACF06 | PA-2 | 099 | 329 |  |  |  |  |  |
| PP3AE09904C0 |  | PA-P3 ; Ceiling - final Paint (Elec RM)_PA-2 | 10d | 2012-09-16 | 2012-09-27 | PP3AE09903C0, PP1S103331C460, PP1S103331C470, PP1S103331C450, PP1S903371C10, PP1SX03371C10, PP1SX03373C10, PP2AP21113C10 SS | 114.65d | 88.34d | ASSORTED CEILING FINISH [5 h]; Cost | 1546 | CP2ME09907C0 | PP3AE09904C0 | PA | C | P3 | ER | PA | 099 | 04 | PA | N | BILL 2 | B02 | S1 | 02 | R00 | ACF06 | PA-2 | 099 |  |  |  |  |  |  |
| PP3AE23006C0 |  | PA-P3 ; Final Fix, Inst of Flexible Duct & Plenum boxes (Elec RM)_PA-2 | 18d | 2012-09-16 | 2012-10-07 | PP3AE09501C0, PP1S103331C460, PP1S103331C470, PP1S103331C450, PP1S903371C10, PP1SX03371C10, PP1SX03373C10, PP2AP21113C10 SS | 58.65d | 0d | MECHANICAL [33.6 h]; Cost |  | CP2ME23032C0 | PP3AE23006C0 | PA | C | P3 | ER | ME | 230 | 06 | PA | N | BILL 2 | B02 | S1 | FF | R00 | ACF07 | PA-2 | 230 |  | MEP |  | FF |  |  |
| PP3AE26004C0 |  | PA-P3 ; Final Fix, Inst of Ceiling rose (Elec RM)_PA-2 | 18d | 2012-09-16 | 2012-10-07 | PP3AE09501C0, PP1S103331C460, PP1S103331C470, PP1S103331C450, PP1S903371C10, PP1SX03371C10, PP1SX03373C10, PP2AP21113C10 SS | 106.65d | 80.34d | ELECTRICAL [25.2 h]; Cost |  | CP2ME26032C0 | PP3AE26004C0 | PA | C | P3 | ER | ME | 260 | 04 | PA | N | BILL 2 | B02 | S1 | FF | R00 | ACF07 | PA-2 | 260 |  | MEP |  | FF |  |  |
| PP3AE27003C0 |  | PA-P3 ; Final Fix, BMS connection work to Equipment (Elec RM)_PA-2 | 18d | 2012-09-16 | 2012-10-07 | PP3AE26009C0, PP1S103331C460, PP1S103331C470, PP1S103331C450, PP1S903371C10, PP1SX03371C10, PP1SX03373C10, PP2AP21113C10 SS | 106.65d | 80.34d | ELECTRICAL [2335.2 h]; Cost |  | CP2ME27032C0 | PP3AE27003C0 | PA | C | P3 | ER | ME | 270 | 03 | PA | N | BILL 2 | B02 | S1 | FF | R00 | ACF07 | PA-2 | 270 |  | MEP |  | FF |  |  |
| PP3AE08701C0 |  | PA-P3 ; Ironmongery (Elec RM)_PA-2 | 14d | 2012-09-30 | 2012-10-16 | PP3AE08103C0, PP1S103331C460, PP1S103331C470, PP1S103331C450, PP1S903371C10, PP1SX03371C10, PP1SX03373C10, PP2AP21113C10 SS | 98.65d | 72.34d | IRONMONGERY [30 h]; IRONMONGERY [3 no]; Cost | 6230 | CP2ME08709C0 | PP3AE08701C0 | PA | C | P3 | ER | DO | 087 | 01 | PA | N | BILL 2 | B02 | S1 | IM | R00 | ACF06 | PA-2 | 087 | 322 |  |  |  | 08 |  |
| PP3AE22001C0 |  | PA-P3 ; Final Fix, Inst of All drain (Elec RM)_PA-2 | 18d | 2012-10-03 | 2012-10-24 | PP3AE09601C0, PP1S103331C460, PP1S103331C470, PP1S103331C450, PP1S903371C10, PP1SX03371C10, PP1SX03373C10, PP2AP21113C10 SS | 91.65d | 65.34d | PLUMBING [2156.4 h]; Cost |  | CP2ME22037C0 | PP3AE22001C0 | PA | C | P3 | ER | ME | 220 | 01 | PA | N | BILL 2 | B02 | S1 | FF | R00 | ACF07 | PA-2 | 220 |  | MEP |  | FF |  |  |
| PP3AE09502C0 |  | PA-P3 ; Ceiling closure (Elec RM)_PA-2 | 30d | 2012-10-07 | 2012-11-13 | PP3AE09501C0, PP3AE23006C0, PP3AE26007C0, PP3AE26008C0, PP3AE27001C0, PP1S103331C460, PP1S103331C470, PP1S103331C450, PP1S903371C10, PP1SX03371C10, PP1SX03373C10, PP2AP21113C10 SS | 58.65d | 0d | ASSORTED CEILING FINISH [89.79 h]; CEILING GYPSUM [44.48 h]; ASSORTED CEILING FINISH [146 m2]; CEILING GYPSUM [136 m2]; Cost | 1409 | CP2ME09503C0 | PP3AE09502C0 | PA | C | P3 | ER | CE | 095 | 02 | PA | N | BILL 2 | B02 | S1 | 02 | R00 | ACF06 | PA-2 | 095 | 324 |  |  |  |  |  |
| PP3AE21101C0 |  | PA-P3 ; Final Fix, Gaseous Fire Suppression Electrical Room (Elec RM)_PA-2 | 18d | 2012-11-13 | 2012-12-06 | PP3AE09502C0, PP1S103331C460, PP1S103331C470, PP1S103331C450, PP1S903371C10, PP1SX03371C10, PP1SX03373C10, PP2AP21113C10 SS | 58.65d | 32.34d | MECHANICAL [697.2 h]; Cost |  | CP2ME21109C0 | PP3AE21101C0 | PA | C | P3 | ER | ME | 211 | 01 | PA | N | BILL 2 | B02 | S1 | FF | R00 | ACF07 | PA-2 | 211 |  | MEP |  | FF |  |  |
| PP3AE21102C0 |  | PA-P3 ; Final Fix, Gaseous Fire Suppression Transformer room (Elec RM)_PA-2 | 18d | 2012-11-13 | 2012-12-06 | PP3AE09502C0, PP1S103331C460, PP1S103331C470, PP1S103331C450, PP1S903371C10, PP1SX03371C10, PP1SX03373C10, PP2AP21113C10 SS | 58.65d | 32.34d | MECHANICAL [697.2 h]; Cost |  | CP2ME21111C0 | PP3AE21102C0 | PA | C | P3 | ER | ME | 211 | 02 | PA | N | BILL 2 | B02 | S1 | FF | R00 | ACF07 | PA-2 | 211 |  | MEP |  | FF |  |  |
| PP3AE21103C0 |  | PA-P3 ; Final Fix, Gaseous Fire Suppression Telecom Room (Elec RM)_PA-2 | 18d | 2012-11-13 | 2012-12-06 | PP3AE09502C0, PP1S103331C460, PP1S103331C470, PP1S103331C450, PP1S903371C10, PP1SX03371C10, PP1SX03373C10, PP2AP21113C10 SS | 58.65d | 32.34d | MECHANICAL [697.2 h]; Cost |  | CP2ME21113C0 | PP3AE21103C0 | PA | C | P3 | ER | ME | 211 | 03 | PA | N | BILL 2 | B02 | S1 | FF | R00 | ACF07 | PA-2 | 211 |  | MEP |  | FF |  |  |
| PP3AE23005C0 |  | PA-P3 ; Final Fix, Inst of Grilles & Diffusers (Elec RM)_PA-2 | 18d | 2012-11-13 | 2012-12-06 | PP3AE09502C0, PP1S103331C460, PP1S103331C470, PP1S103331C450, PP1S903371C10, PP1SX03371C10, PP1SX03373C10, PP2AP21113C10 SS | 58.65d | 32.34d | MECHANICAL [495.6 h]; Cost |  | CP2ME23030C0 | PP3AE23005C0 | PA | C | P3 | ER | ME | 230 | 05 | PA | N | BILL 2 | B02 | S1 | FF | R00 | ACF07 | PA-2 | 230 |  | MEP |  | FF |  |  |
| PP3AE26003C0 |  | PA-P3 ; Final Fix, Termination & Gladding of Cables (Elec RM)_PA-2 | 18d | 2012-11-13 | 2012-12-06 | PP3AE09502C0, PP1S103331C460, PP1S103331C470, PP1S103331C450, PP1S903371C10, PP1SX03371C10, PP1SX03373C10, PP2AP21113C10 SS | 58.65d | 32.34d | ELECTRICAL [512.4 h]; Cost |  | CP2ME26030C0 | PP3AE26003C0 | PA | C | P3 | ER | ME | 260 | 03 | PA | N | BILL 2 | B02 | S1 | FF | R00 | ACF07 | PA-2 | 260 |  | MEP |  | FF |  |  |
| PP3AE26005C0 |  | PA-P3 ; Final Fix, Inst of Switch/Sockets (Elec RM)_PA-2 | 18d | 2012-11-13 | 2012-12-06 | PP3AE09502C0, PP1S103331C460, PP1S103331C470, PP1S103331C450, PP1S903371C10, PP1SX03371C10, PP1SX03373C10, PP2AP21113C10 SS | 58.65d | 32.34d | ELECTRICAL [124.8 h]; Cost |  | CP2ME26034C0 | PP3AE26005C0 | PA | C | P3 | ER | ME | 260 | 05 | PA | N | BILL 2 | B02 | S1 | FF | R00 | ACF07 | PA-2 | 260 |  | MEP |  | FF |  |  |
| PP3AE26006C0 |  | PA-P3 ; Final Fix, Inst of Light fittings (Elec RM)_PA-2 | 18d | 2012-11-13 | 2012-12-06 | PP3AE09502C0, PP1S103331C460, PP1S103331C470, PP1S103331C450, PP1S903371C10, PP1SX03371C10, PP1SX03373C10, PP2AP21113C10 SS | 58.65d | 32.34d | ELECTRICAL [3124.8 h]; Cost |  | CP2ME26039C0 | PP3AE26006C0 | PA | C | P3 | ER | ME | 260 | 06 | PA | N | BILL 2 | B02 | S1 | FF | R00 | ACF07 | PA-2 | 260 |  | MEP |  | FF |  |  |
| PP3AE27004C0 |  | PA-P3 ; Final Fix, Inst of ELV device (Detector/Speaker) (Elec RM)_PA-2 | 18d | 2012-11-13 | 2012-12-06 | PP3AE09502C0, PP1S103331C460, PP1S103331C470, PP1S103331C450, PP1S903371C10, PP1SX03371C10, PP1SX03373C10, PP2AP21113C10 SS | 58.65d | 32.34d | ELECTRICAL [78 h]; Cost |  | CP2ME27030C0 | PP3AE27004C0 | PA | C | P3 | ER | ME | 270 | 04 | PA | N | BILL 2 | B02 | S1 | FF | R00 | ACF07 | PA-2 | 270 |  | MEP |  | FF |  |  |

| ID | WBS | Activity | Duration | Start | Finish | Predecessors | Total float | Free float | Resources | Change Order # | NEW ACTIVITY ID | change id | IDDD | CCAD BUILDING(SET) | CCAD PHASE(SET) | CCAD FLOOR(SET) | CCAD ZONE(SET) | CCAD WORK(SET) | CCAD SECTION(SET) | CCAD SERIAL No.(SET) | CCAD Carpark code(SET) | CCAD Carpark district code(set) | CCAD CBS(SET) | CCAD BILL(SET) | CCAD HANDOVER(SET) | CCAD TAG(SET) | CCAD REV(SET) | CCADACF (SET) | FSP CODE | CCAD SSCF | CCAD SUB ZONE MEP(SET) | CCAD CSA | Act Selector % | CCAD MEQ | CCAD DIVISION(SET) |
| --- | --- | --- | --- | --- | --- | --- | --- | --- | --- | --- | --- | --- | --- | --- | --- | --- | --- | --- | --- | --- | --- | --- | --- | --- | --- | --- | --- | --- | --- | --- | --- | --- | --- | --- | --- |
|  | AM2 | **MECHANICAL ROOMS (4 NOS.) ; Zone PA-2** |  | 2012-01-12 | 2012-12-23 |  |  |  |  |  |  |  |  |  |  |  |  |  |  |  |  |  |  |  |  |  |  |  |  |  |  |  |  |  |  |
| PP3AM09902C0 |  | PA-P3 ; Wall Prime & 1st coat (Mech RM)_PA-2 | 18d | 2012-01-12 | 2012-02-02 | PP1SX03372C0, PP1SX03373C0 | 26.31d | 0d | WALL PAINT [912 h]; WALL PAINT [1138 m2]; Cost | 328 | 1469 | C04ME09901C0 | PP3AM09902C0 | PA | C | P3 | M1 | PA | 099 | 02 | PA | N | BILL 2 | B02 | S1 | 01 | R00 | ACF06 | PA-2 | 099 |  |  |  |  |  |
| PP3AM04001C0 |  | PA-P3 ; Block Wall Works (Mech RM)_PA-2 | 30d | 2012-02-02 | 2012-03-10 | PP3AM09902C0 | 44.31d | 0d | BLOCKWORKS [970 h]; BLOCKWORKS [277 m2]; Cost |  |  | AP3M104001C0 | PP3AM04001C0 | PA | C | P3 | M1 | BL | 040 | 01 | PA | N | BILL 2 | B02 | S1 | BL | R00 | ACF06 | PA-2 | 040 |  |  |  |  |  |
| PP3AM23003C0 |  | PA-P3 ; 1st Fix, Inst. of Supports for MEP (Mech RM)_PA-2 | 12d | 2012-03-10 | 2012-03-24 | PP3AM04001C0, PP3AM09902C0 | 44.31d | 0d | MECHANICAL [625.2 h]; Cost |  |  | C04ME23001C0 | PP3AM23003C0 | PA | C | P3 | M1 | ME | 230 | 03 | PA | N | BILL 2 | B02 | S1 | 1F | R00 | ACF04 | PA-2 | 230 | 1S | MEP | M1F |  |  |
| PP3AM09201C0 |  | PA-P3 ; Metal Studs (Mech RM)_PA-2 | 10d | 2012-03-24 | 2012-04-04 | PP3AM04001C0 SS+30d, PP3AM23003C0 | 122.31d | 0d | PARTITIONS [58 h]; PARTITIONS [8 m]; Cost |  |  | C04ME09201C0 | PP3AM09201C0 | PA | C | P3 | M1 | PT | 092 | 01 | PA | N | BILL 2 | B02 | S1 | 1F | R00 | ACF06 | PA-2 | 092 |  | GP | PMS |  |  |
| PP3AM21102C0 |  | PA-P3 ; 1st Fix, Inst of Sprinkler main pipe (Mech RM)_PA-2 | 42d | 2012-03-24 | 2012-05-12 | PP3AM22003C0 SS, PP3AM04001C0, PP3AM23003C0 | 44.31d | 0d | MECHANICAL [9823.2 h]; Cost |  |  | C04ME21111C0 | PP3AM21102C0 | PA | C | P3 | M1 | ME | 211 | 02 | PA | N | BILL 2 | B02 | S1 | 1F | R00 | ACF04 | PA-2 | 211 | 1S | MEP | M1F |  |  |
| PP3AM22001C0 |  | PA-P3 ; 1st Fix, Inst of Drainage pipe (Mech RM)_PA-2 | 42d | 2012-03-24 | 2012-05-12 | PP3AM26001C0 SS, PP3AM04001C0, PP3AM23003C0 | 44.31d | 0d | PLUMBING [2156.4 h]; Cost |  |  | C04ME22011C0 | PP3AM22001C0 | PA | C | P3 | M1 | ME | 220 | 01 | PA | N | BILL 2 | B02 | S1 | 1F | R00 | ACF04 | PA-2 | 220 | 1S | MEP | M1F |  |  |
| PP3AM22003C0 |  | PA-P3 ; 1st Fix, Inst of Water supply pipe (Mech RM)_PA-2 | 42d | 2012-03-24 | 2012-05-12 | PP3AM22001C0 SS, PP3AM04001C0, PP3AM23003C0 | 44.31d | 0d | PLUMBING [6082.8 h]; Cost |  |  | C04ME22006C0 | PP3AM22003C0 | PA | C | P3 | M1 | ME | 220 | 03 | PA | N | BILL 2 | B02 | S1 | 1F | R00 | ACF04 | PA-2 | 220 | 1S | MEP | M1F |  |  |
| PP3AM23001C0 |  | PA-P3 ; 1st Fix, Inst of CHW pipe (Mech RM)_PA-2 | 42d | 2012-03-24 | 2012-05-12 | PP3AM21102C0 SS, PP3AM04001C0, PP3AM23003C0 | 86.31d | 6d | MECHANICAL [3097.2 h]; Cost |  |  | C04ME23019C0 | PP3AM23001C0 | PA | C | P3 | M1 | ME | 230 | 01 | PA | N | BILL 2 | B02 | S1 | 1F | R00 | ACF04 | PA-2 | 230 | 1S | MEP | M1F |  |  |
| PP3AM26001C0 |  | PA-P3 ; 1st Fix, Inst of Cable Tray (Mech RM)_PA-2 | 42d | 2012-03-24 | 2012-05-12 | PP3AM04001C0, PP3AM23003C0 | 44.31d | 0d | ELECTRICAL [63.6 h]; Cost |  |  | C04ME26011C0 | PP3AM26001C0 | PA | C | P3 | M1 | ME | 260 | 01 | PA | N | BILL 2 | B02 | S1 | 1F | R00 | ACF04 | PA-2 | 260 | 1S | MEP | M1F |  |  |
| PP3AM23004C0 |  | PA-P3 ; 2nd Fix, Inst of Equipment (AHU) (Mech RM)_PA-2 | 42d | 2012-03-31 | 2012-05-19 | PP3AM04001C0, PP3AM09201C0 SS+6d, PP3AM22001C0 FF, PP3AM22003C0 FF | 122.31d | 0d | MECHANICAL [528 h]; Cost |  |  | C04ME23013C0 | PP3AM23004C0 | PA | C | P3 | M1 | ME | 230 | 04 | PA | N | BILL 2 | B02 | S1 | 2F | R00 | ACF04 | PA-2 | 230 | 2n | MEP |  | H |  |
| PP3AM08102C0 |  | PA-P3 ; Metal Door Frames (Mech RM)_PA-2 | 16d | 2012-04-04 | 2012-04-23 | PP3AM09201C0, GNHE08101C0 | 203.31d | 121.66d | METAL DOORS [87 h]; Cost | 316 | 1465 | C04ME08101C0 | PP3AM08102C0 | PA | C | P3 | M1 | DO | 081 | 02 | PA | N | BILL 2 | B02 | S1 | DF | R00 | ACF06 | PA-2 | 081 |  |  |  |  | 08 |
| PP3AM09202C0 |  | PA-P3 ; Partitions 1st face (Mech RM)_PA-2 | 20d | 2012-04-07 | 2012-04-30 | PP3AM09201C0 SS+12d | 174.31d | 115.66d | PARTITIONS [8 m]; PARTITIONS [32 h]; Cost | 314 | 1463 | C04ME09203C0 | PP3AM09202C0 | PA | C | P3 | M1 | PT | 092 | 02 | PA | N | BILL 2 | B02 | S1 | 2F | R00 | ACF06 | PA-2 | 092 |  | GP | P1F |  |  |
| PP3AM21101C0 |  | PA-P3 ; 1st Fix, Inst of Sprinkler branch pipe (Mech RM)_PA-2 | 42d | 2012-05-12 | 2012-07-01 | PP3AM21102C0 SS, PP3AM04001C0, PP3AM23003C0, PP3AM21102C0 | 128.31d | 0d | MECHANICAL [8076 h]; Cost |  |  | C04ME21119C0 | PP3AM21101C0 | PA | C | P3 | M1 | ME | 211 | 01 | PA | N | BILL 2 | B02 | S1 | 1F | R00 | ACF04 | PA-2 | 211 | 1S | MEP | M1F |  |  |
| PP3AM23002C0 |  | PA-P3 ; 1st Fix, Inst of Ducting (Mech RM)_PA-2 | 42d | 2012-05-12 | 2012-07-01 | PP3AM23001C0 SS, PP3AM04001C0, PP3AM23003C0, PP3AM21102C0 | 44.31d | 0d | MECHANICAL [3948 h]; Cost |  |  | C04ME23005C0 | PP3AM23002C0 | PA | C | P3 | M1 | ME | 230 | 02 | PA | N | BILL 2 | B02 | S1 | 1F | R00 | ACF04 | PA-2 | 230 | 1S | MEP | M1F |  |  |
| PP3AM26003C0 |  | PA-P3 ; 2nd Fix, Cable Pulling (Mech RM)_PA-2 | 42d | 2012-05-12 | 2012-07-01 | PP3AM26001C0 | 128.31d | 84d | ELECTRICAL [4096.8 h]; Cost |  |  | C04ME26007C0 | PP3AM26003C0 | PA | C | P3 | M1 | ME | 260 | 03 | PA | N | BILL 2 | B02 | S1 | 2F | R00 | ACF07 | PA-2 | 260 | 2n | MEP |  |  |  |
| PP3AM21105C0 |  | PA-P3 ; 2nd Fix, Inst of Zone Control Valve (Mech RM)_PA-2 | 42d | 2012-05-19 | 2012-07-08 | PP3AM23001C0, PP3AM23004C0 | 164.31d | 78d | MECHANICAL [925.2 h]; Cost |  |  | C04ME21117C0 | PP3AM21105C0 | PA | C | P3 | M1 | ME | 211 | 05 | PA | N | BILL 2 | B02 | S1 | 2F | R00 | ACF07 | PA-2 | 211 | 2n | MEP |  |  |  |
| PP3AM23005C0 |  | PA-P3 ; 2nd Fix, Inst of Equipment (FCU,FAN,PUMP) (Mech RM)_PA-2 | 42d | 2012-05-19 | 2012-07-08 | PP3AM23004C0 | 122.31d | 0d | MECHANICAL [2246.4 h]; Cost |  |  | C04ME23011C0 | PP3AM23005C0 | PA | C | P3 | M1 | ME | 230 | 05 | PA | N | BILL 2 | B02 | S1 | 2F | R00 | ACF04 | PA-2 | 230 | 2n | MEP |  | H |  |
| PP3AM26004C0 |  | PA-P3 ; 2nd Fix, Inst of Equipment (DB, TR, SG) (Mech RM)_PA-2 | 42d | 2012-05-19 | 2012-07-08 | PP3AM23004C0 | 164.31d | 78d | ELECTRICAL [1192.8 h]; Cost |  |  | C04ME26009C0 | PP3AM26004C0 | PA | C | P3 | M1 | ME | 260 | 04 | PA | N | BILL 2 | B02 | S1 | 2F | R00 | ACF04 | PA-2 | 260 | 2n | MEP |  | E |  |
| PP3AM27003C0 |  | PA-P3 ; 2nd Fix, Inst of ELV Equipment (Panels) (Mech RM)_PA-2 | 42d | 2012-05-19 | 2012-07-08 | PP3AM23004C0 | 164.31d | 57.66d | ELECTRICAL [183.6 h]; Cost |  |  | C04ME27020C0 | PP3AM27003C0 | PA | C | P3 | M1 | ME | 270 | 03 | PA | N | BILL 2 | B02 | S1 | 2F | R00 | ACF04 | PA-2 | 270 | 2n | MEP |  | E |  |
| PP3AM21104C0 |  | PA-P3 ; 2nd Fix, Inst of Sprinkler droppers (Mech RM)_PA-2 | 42d | 2012-07-01 | 2012-08-21 | PP3AM21101C0 | 128.31d | 21.66d | MECHANICAL [3387.6 h]; Cost |  |  | C04ME21115C0 | PP3AM21104C0 | PA | C | P3 | M1 | ME | 211 | 04 | PA | N | BILL 2 | B02 | S1 | 2F | R00 | ACF07 | PA-2 | 211 | 2n | MEP |  |  |  |
| PP3AM23007C0 |  | PA-P3 ; 2nd Fix, Inst of VCD's/FD's (Mech RM)_PA-2 | 42d | 2012-07-01 | 2012-08-21 | PP3AM23002C0 | 110.31d | 21.66d | MECHANICAL [1168.8 h]; Cost |  |  | C04ME23015C0 | PP3AM23007C0 | PA | C | P3 | M1 | ME | 230 | 07 | PA | N | BILL 2 | B02 | S1 | 2F | R00 | ACF07 | PA-2 | 230 | 2n | MEP |  |  |  |
| PP3AM23008C0 |  | PA-P3 ; 2nd Fix, Insulation of CHW pipe & Duct (Mech RM)_PA-2 | 42d | 2012-07-01 | 2012-08-21 | PP3AM23001C0, PP3AM23002C0 | 110.31d | 21.66d | MECHANICAL [3702 h]; Cost |  |  | C04ME23017C0 | PP3AM23008C0 | PA | C | P3 | M1 | ME | 230 | 08 | PA | N | BILL 2 | B02 | S1 | 2F | R00 | ACF07 | PA-2 | 230 | 2n | MEP |  |  |  |
| PP3AM26002C0 |  | PA-P3 ; 1st Fix, Inst of Trunking/Conduiting (Mech RM)_PA-2 | 42d | 2012-07-01 | 2012-08-21 | PP3AM04001C0, PP3AM23003C0, PP3AM23002C0 | 86.31d | 42d | ELECTRICAL [192 h]; Cost |  |  | C04ME26001C0 | PP3AM26002C0 | PA | C | P3 | M1 | ME | 260 | 02 | PA | N | BILL 2 | B02 | S1 | 1F | R00 | ACF04 | PA-2 | 260 | 1S | MEP | M1F |  |  |
| PP3AM27001C0 |  | PA-P3 ; 1st Fix, Inst of Trunking for ELV system (Mech RM)_PA-2 | 42d | 2012-07-01 | 2012-08-21 | PP3AM23002C0, PP3AM26001C0 SS, PP3AM04001C0, PP3AM23003C0 | 44.31d | 0d | ELECTRICAL [535.2 h]; Cost |  |  | C04ME27010C0 | PP3AM27001C0 | PA | C | P3 | M1 | ME | 270 | 01 | PA | N | BILL 2 | B02 | S1 | 1F | R00 | ACF04 | PA-2 | 270 | 1S | MEP | M1F |  |  |
| PP3AM23006C0 |  | PA-P3 ; 2nd Fix, Inst of VAV'S CHW connection (Mech RM)_PA-2 | 42d | 2012-07-08 | 2012-08-28 | PP3AM23005C0 | 122.31d | 15.66d | MECHANICAL [50.4 h]; Cost |  |  | C04ME23009C0 | PP3AM23006C0 | PA | C | P3 | M1 | ME | 230 | 06 | PA | N | BILL 2 | B02 | S1 | 2F | R00 | ACF07 | PA-2 | 230 | 2n | MEP |  |  |  |
| PP3AM27002C0 |  | PA-P3 ; 1st Fix, Wiring/ Cabling work (Mech RM)_PA-2 | 42d | 2012-08-21 | 2012-10-09 | PP3AM26001C0 SS, PP3AM26002C0 SS, PP3AM27001C0 SS, PP3AM04001C0, PP3AM23003C0, PP3AM27001C0 | 44.31d | 0d | ELECTRICAL [76.8 h]; Cost |  |  | C04ME27001C0 | PP3AM27002C0 | PA | C | P3 | M1 | ME | 270 | 02 | PA | N | BILL 2 | B02 | S1 | 1F | R00 | ACF04 | PA-2 | 270 | 1S | MEP | M1F |  |  |
| PP3AM08103C0 |  | PA-P3 ; Metal Doors (Mech RM)_PA-2 | 16d | 2012-09-16 | 2012-10-04 | PP3AM08102C0, PP1S103331C460, PP1S103331C470, PP1S103331C450, PP1S903371C10, PP1SX03371C10, PP1SX03373C10, PP2AP21113C10 SS | 81.65d | 0d | METAL DOORS [80 h]; METAL DOORS [8 no]; Cost | 317 | 1466 | C04ME08105C0 | PP3AM08103C0 | PA | C | P3 | M1 | DO | 081 | 03 | PA | N | BILL 2 | B02 | S1 | DR | R00 | ACF06 | PA-2 | 081 |  |  |  |  | 08 |
| PP3AM09203C0 |  | PA-P3 ; Partitions Closing (Mech RM)_PA-2 | 28d | 2012-09-16 | 2012-10-18 | PAFOA09201C1 FF, PP3AM09202C0, PP3AM22001C0, PP3AM22003C0, PP3AM08102C0 FF, PP1S103331C460, PP1S103331C470, PP1S103331C450, PP1S903371C10, PP1SX03371C10, PP1SX03373C10, PP2AP21113C10 SS | 58.65d | 0d | PARTITIONS [7.53 m]; PARTITIONS [54 h]; Cost | 315 | 1464 | C04ME09205C0 | PP3AM09203C0 | PA | C | P3 | M1 | PT | 092 | 03 | PA | N | BILL 2 | B02 | S1 | FF | R00 | ACF06 | PA-2 | 092 |  | GP | P2F |  |  |
| PP3AM09901C0 |  | PA-P3 ; Wall - final Paint (Mech RM)_PA-2 | 12d | 2012-09-16 | 2012-09-30 | PP3AM09902C0, PP1S103331C460, PP1S103331C470, PP1S103331C450, PP1S903371C10, PP1SX03371C10, PP1SX03373C10, PP2AP21113C10 SS | 112.65d | 86.34d | WALL PAINT [492 h]; WALL PAINT [613 m2]; Cost | 329 | 1470 | C04ME09903C0 | PP3AM09901C0 | PA | C | P3 | M1 | PA | 099 | 01 | PA | N | BILL 2 | B02 | S1 | 02 | R00 | ACF06 | PA-2 | 099 |  |  |  |  |  |
| PP3AM21107C0 |  | PA-P3 ; Final Fix, Inst of Sprinklers head (Mech RM)_PA-2 | 18d | 2012-09-16 | 2012-10-07 | PP3AM21104C0, PP1S103331C460, PP1S103331C470, PP1S103331C450, PP1S903371C10, PP1SX03371C10, PP1SX03373C10, PP2AP21113C10 SS | 106.65d | 80.34d | MECHANICAL [1396.8 h]; Cost |  |  | C04ME21121C0 | PP3AM21107C0 | PA | C | P3 | M1 | ME | 211 | 07 | PA | N | BILL 2 | B02 | S1 | FF | R00 | ACF07 | PA-2 | 211 | FF | MEP |  |  |  |
| PP3AM23009C0 |  | PA-P3 ; Final Fix, Inst of Flexible Duct & Plenum boxes (Mech RM)_PA-2 | 18d | 2012-09-16 | 2012-10-07 | PP3AM23007C0, PP3AM23008C0, PP1S103331C460, PP1S103331C470, PP1S103331C450, PP1S903371C10, PP1SX03371C10, PP1SX03373C10, PP2AP21113C10 SS | 88.65d | 0d | MECHANICAL [33.6 h]; Cost |  |  | C04ME23023C0 | PP3AM23009C0 | PA | C | P3 | M1 | ME | 230 | 09 | PA | N | BILL 2 | B02 | S1 | FF | R00 | ACF07 | PA-2 | 230 | FF | MEP |  |  |  |
| PP3AM26007C0 |  | PA-P3 ; Final Fix, Inst of Light fittings (Mech RM)_PA-2 | 18d | 2012-09-16 | 2012-10-07 | PP3AM09902C0, PP1S103331C460, PP1S103331C470, PP1S103331C450, PP1S903371C10, PP1SX03371C10, PP1SX03373C10, PP2AP21113C10 SS | 106.65d | 80.34d | ELECTRICAL [3124.8 h]; Cost |  |  | C04ME26019C0 | PP3AM26007C0 | PA | C | P3 | M1 | ME | 260 | 07 | PA | N | BILL 2 | B02 | S1 | FF | R00 | ACF07 | PA-2 | 260 | FF | MEP |  |  |  |
| PP3AM26008C0 |  | PA-P3 ; Final Fix, Inst of Switch/Sockets (Mech RM)_PA-2 | 18d | 2012-09-16 | 2012-10-07 | PP3AM09902C0, PP1S103331C460, PP1S103331C470, PP1S103331C450, PP1S903371C10, PP1SX03371C10, PP1SX03373C10, PP2AP21113C10 SS | 106.65d | 80.34d | ELECTRICAL [500.4 h]; Cost |  |  | C04ME26017C0 | PP3AM26008C0 | PA | C | P3 | M1 | ME | 260 | 08 | PA | N | BILL 2 | B02 | S1 | FF | R00 | ACF07 | PA-2 | 260 | FF | MEP |  |  |  |
| PP3AM27005C0 |  | PA-P3 ; Final Fix, Inst of ELV device (Detector/Speaker) (Mech RM)_PA-2 | 18d | 2012-09-16 | 2012-10-07 | PP3AM09902C0, PP3AM23006C0, PP3AM27003C0, PP1S103331C460, PP1S103331C470, PP1S103331C450, PP1S903371C10, PP1SX03371C10, PP1SX03373C10, PP2AP21113C10 SS | 106.65d | 80.34d | ELECTRICAL [140.4 h]; Cost |  |  | C04ME27030C0 | PP3AM27005C0 | PA | C | P3 | M1 | ME | 270 | 05 | PA | N | BILL 2 | B02 | S1 | FF | R00 | ACF07 | PA-2 | 270 | FF | MEP |  |  |  |
| PP3AM08101C0 |  | PA-P3 ; Al / Glass doors (Mech RM)_PA-2 | 12d | 2012-10-04 | 2012-10-18 | PP3AM08103C0, PP1S103331C460, PP1S103331C470, PP1S103331C450, PP1S903371C10, PP1SX03371C10, PP1SX03373C10, PP2AP21113C10 SS | 81.65d | 0d | ASSORTED DOORS [120 h]; ASSORTED DOORS [12 no]; Cost |  |  | C04ME08109C0 | PP3AM08101C0 | PA | C | P3 | M1 | DO | 081 | 01 | PA | N | BILL 2 | B02 | S1 | 03 | R00 | ACF06 | PA-2 | 081 |  |  |  |  |  |
| PP3AM23010C0 |  | PA-P3 ; Final Fix, Inst of Grilles & Diffusers (Mech RM)_PA-2 | 18d | 2012-10-07 | 2012-10-30 | PP3AM23009C0, PP1S103331C460, PP1S103331C470, PP1S103331C450, PP1S903371C10, PP1SX03371C10, PP1SX03373C10, PP2AP21113C10 SS | 88.65d | 62.34d | MECHANICAL [495.6 h]; Cost |  |  | C04ME23021C0 | PP3AM23010C0 | PA | C | P3 | M1 | ME | 230 | 10 | PA | N | BILL 2 | B02 | S1 | FF | R00 | ACF07 | PA-2 | 230 | FF | MEP |  |  |  |
| PP3AM26005C0 |  | PA-P3 ; 2nd Fix, Wiring for Power/Lighting/Emergency (Mech RM)_PA-2 | 42d | 2012-10-09 | 2012-12-01 | PP3AM26001C0, PP3AM26002C0, PP3AM26003C0, PP3AM27001C0, PP3AM27002C0 | 44.31d | 0d | ELECTRICAL [76.8 h]; Cost |  |  | C04ME26005C0 | PP3AM26005C0 | PA | C | P3 | M1 | ME | 260 | 05 | PA | N | BILL 2 | B02 | S1 | 2F | R00 | ACF07 | PA-2 | 260 | 2n | MEP |  |  |  |
| PP3AM27004C0 |  | PA-P3 ; Final Fix, BMS connection work to Equipment (Mech RM)_PA-2 | 18d | 2012-10-09 | 2012-11-01 | PP3AM21105C0, PP3AM23004C0, PP3AM23005C0, PP3AM23007C0, PP3AM26004C0, PP3AM27002C0, PP3AM27003C0, PP1S103331C460, PP1S103331C470, PP1S103331C450, PP1S903371C10, PP1SX03371C10, PP1SX03373C10, PP2AP21113C10 SS | 86.31d | 60d | ELECTRICAL [2335.2 h]; Cost |  |  | C04ME27003C0 | PP3AM27004C0 | PA | C | P3 | M1 | ME | 270 | 04 | PA | N | BILL 2 | B02 | S1 | FF | R00 | ACF07 | PA-2 | 270 | FF | MEP |  |  |  |
| PP3AM08701C0 |  | PA-P3 ; Ironmongery (Mech RM)_PA-2 | 15d | 2012-10-18 | 2012-11-07 | PP3AM08101C0, PP3AM08103C0, PP1S103331C460, PP1S103331C470, PP1S103331C450, PP1S903371C10, PP1SX03371C10, PP1SX03373C10, PP2AP21113C10 SS | 81.65d | 55.34d | IRONMONGERY [80 h]; IRONMONGERY [8 no]; Cost | 322 | 1467 | C04ME08709C0 | PP3AM08701C0 | PA | C | P3 | M1 | DO | 087 | 01 | PA | N | BILL 2 | B02 | S1 | IM | R00 | ACF06 | PA-2 | 087 |  |  |  |  | 08 |
| PP3AM09601C0 |  | PA-P3 ; Floor Finishes (Mech RM)_PA-2 | 20d | 2012-10-18 | 2012-11-13 | PP3AM09203C0, PP1S103331C460, PP1S103331C470, PP1S103331C450, PP1S903371C10, PP1SX03371C10, PP1SX03373C10, PP2AP21113C10 SS | 58.65d | 0d | ASSORTED FLOOR FINISH [3920 h]; ASSORTED FLOOR FINISH [2177 m2]; Cost | 326 | 1501 | C04ME09601C0 | PP3AM09601C0 | PA | C | P3 | M1 | FF | 096 | 01 | PA | N | BILL 2 | B02 | S1 | 01 | R00 | ACF06 | PA-2 | FF |  |  |  |  |  |
| PP3AM21106C0 |  | PA-P3 ; Final Fix, Inst of Fire Extinguishers/FHC (Mech RM)_PA-2 | 18d | 2012-10-18 | 2012-11-11 | PP3AM09203C0, PP1S103331C460, PP1S103331C470, PP1S103331C450, PP1S903371C10, PP1SX03371C10, PP1SX03373C10, PP2AP21113C10 SS | 78.65d | 52.34d | MECHANICAL [2016 h]; Cost |  |  | C04ME21123C0 | PP3AM21106C0 | PA | C | P3 | M1 | ME | 211 | 06 | PA | N | BILL 2 | B02 | S1 | FF | R00 | ACF07 | PA-2 | 211 | FF | MEP |  |  |  |
| PP3AM26006C0 |  | PA-P3 ; Final Fix, Inst of Ceiling rose (Mech RM)_PA-2 | 18d | 2012-10-18 | 2012-11-11 | PP3AM09203C0, PP1S103331C460, PP1S103331C470, PP1S103331C450, PP1S903371C10, PP1SX03371C10, PP1SX03373C10, PP2AP21113C10 SS | 78.65d | 52.34d | ELECTRICAL [25.2 h]; Cost |  |  | C04ME26015C0 | PP3AM26006C0 | PA | C | P3 | M1 | ME | 260 | 06 | PA | N | BILL 2 | B02 | S1 | FF | R00 | ACF07 | PA-2 | 260 | FF | MEP |  |  |  |
| PP3AM22004C0 |  | PA-P3 ; Final Fix, Inst of All drain (Mech RM)_PA-2 | 18d | 2012-11-13 | 2012-12-06 | PP3AM09601C0, PP1S103331C460, PP1S103331C470, PP1S103331C450, PP1S903371C10, PP1SX03371C10, PP1SX03373C10, PP2AP21113C10 SS | 58.65d | 32.34d | PLUMBING [2156.4 h]; Cost |  |  | C04ME22003C0 | PP3AM22004C0 | PA | C | P3 | M1 | ME | 220 | 04 | PA | N | BILL 2 | B02 | S1 | FF | R00 | ACF07 | PA-2 | 220 | FF | MEP |  |  |  |
| PP3AM26009C0 |  | PA-P3 ; Final Fix, Termination & Gladding of Cables (Mech RM)_PA-2 | 18d | 2012-12-01 | 2012-12-23 | PP3AM09203C0, PP3AM26005C0, PP1S103331C460, PP1S103331C470, PP1S103331C450, PP1S903371C10, PP1SX03371C10, PP1SX03373C10, PP2AP21113C10 SS | 44.31d | 18d | ELECTRICAL [512.4 h]; Cost |  |  | C04ME26013C0 | PP3AM26009C0 | PA | C | P3 | M1 | ME | 260 | 09 | PA | N | BILL 2 | B02 | S1 | FF | R00 | ACF07 | PA-2 | 260 | FF | MEP |  |  |  |

| ID | WBS | Activity | Duration | Start | Finish | Predecessors | Total float | Free float | Resources | Change Order # | NEW ACTIVITY ID | change id | IDDD | CCAD BUILDING(SET) | CCAD PHASE(SET) | CCAD FLOOR(SET) | CCAD ZONE(SET) | CCAD WORK(SET) | CCAD SECTION(SET) | CCAD SERIAL No.(SET) | CCAD Carpark code(SET) | CCAD Carpark district code(set) | CCAD CBS(SET) | CCAD BILL(SET) | CCAD HANDOVER(SET) | CCAD TAG(SET) | CCAD REV(SET) | CCADACF (SET) | FSP CODE | CCAD SSCF | CCAD SUB ZONE MEP(SET) | CCAD CSA | Act Selector % |
| --- | --- | --- | --- | --- | --- | --- | --- | --- | --- | --- | --- | --- | --- | --- | --- | --- | --- | --- | --- | --- | --- | --- | --- | --- | --- | --- | --- | --- | --- | --- | --- | --- | --- |
|  | BP1 | **PARKING AREA ; Zone PB-1** |  | 2012-01-14 | 2012-12-05 |  |  |  |  |  |  |  |  |  |  |  |  |  |  |  |  |  |  |  |  |  |  |  |  |  |  |  |  |
| PP3BP09901C10 |  | PA-P3 ; Prime & 1st coat (Wall & Ceiling) (Parking Area)_PB-1 | 18d | 2012-01-14 | 2012-02-05 | PGLS103391C100 SS, PGLS103391C110 SS | 25.5d | 0d | CEILING PAINT [1567 h]; WALL PAINT [339 h]; CEILING PAINT [1956.25 m2]; WALL PAINT [422.5 m2]; Cost | 328 | 956 | CP3PA09901C0 | PP3BP09901C0 | PA | C | P3 | PK | PA | 099 | 01 | PB | N | BILL 2 | B02 | S1 | 01 | R00 | ACF06 | PB-1 | 099 |  |  |  |
| PP3BP21114C10 |  | PA-P3 ; 1st Fix, Fire Fighting system (Parking Area)_PB-1 | 36d | 2012-02-05 | 2012-03-18 | PP3BP09901C10 | 25.5d | 0d | MECHANICAL [201.6 h]; Cost |  |  | CP3PA21109C0 | PP3BP21114C0 | PA | C | P3 | PK | ME | 211 | 14 | PB | N | BILL 2 | B02 | S1 | 1F | R00 | ACF04 | PB-1 | 211 | 1S | MEP | M1F |
| PP3BP21124C10 |  | PA-P3 ; 2nd Fix, Fire Fighting system (Parking Area)_PB-1 | 36d | 2012-03-18 | 2012-04-29 | PP3BP21114C10 | 186.62d | 61.4d | MECHANICAL [201.6 h]; Cost |  |  | CP3PA21115C0 | PP3BP21124C0 | PA | C | P3 | PK | ME | 211 | 24 | PB | N | BILL 2 | B02 | S1 | 2F | R00 | ACF07 | PB-1 | 211 | 2n | MEP |  |
| PP3BP22015C10 |  | PA-P3 ; 1st Fix, Plumbing / Drainage System (Parking Area)_PB-1 | 36d | 2012-03-18 | 2012-04-29 | PP3BP21114C10 SS, PP3BP09901C10, PP3BP21114C10 | 90.62d | 0d | PLUMBING [538.8 h]; Cost |  |  | CP3PA22001C0 | PP3BP22015C0 | PA | C | P3 | PK | ME | 220 | 15 | PB | N | BILL 2 | B02 | S1 | 1F | R00 | ACF04 | PB-1 | 220 | 1S | MEP | M1F |
| PP3BP22025C10 |  | PA-P3 ; 2nd Fix, Plumbing / Drainage System (Parking Area)_PB-1 | 36d | 2012-04-29 | 2012-06-10 | PP3BP22015C10 | 162.62d | 37.4d | PLUMBING [538.8 h]; Cost |  |  | CP3PA22011C0 | PP3BP22025C0 | PA | C | P3 | PK | ME | 220 | 25 | PB | N | BILL 2 | B02 | S1 | 2F | R00 | ACF07 | PB-1 | 220 | 2n | MEP |  |
| PP3BP23011C10 |  | PA-P3 ; 1st Fix, CHW / HVAC System (Parking Area)_PB-1 | 36d | 2012-04-29 | 2012-06-10 | PP3BP22015C10 SS, PP3BP09901C10, PP3BP22015C10 | 90.62d | 0d | MECHANICAL [1459.2 h]; Cost |  |  | CP3PA23001C0 | PP3BP23011C0 | PA | C | P3 | PK | ME | 230 | 11 | PB | N | BILL 2 | B02 | S1 | 1F | R00 | ACF04 | PB-1 | 230 | 1S | MEP | M1F |
| PP3BP23021C10 |  | PA-P3 ; 2nd Fix, CHW / HVAC System (Parking Area)_PB-1 | 36d | 2012-06-10 | 2012-07-23 | PP3BP23011C10 | 138.62d | 13.4d | MECHANICAL [1394.4 h]; Cost |  |  | CP3PA23011C0 | PP3BP23021C0 | PA | C | P3 | PK | ME | 230 | 21 | PB | N | BILL 2 | B02 | S1 | 2F | R00 | ACF07 | PB-1 | 230 | 2n | MEP |  |
| PP3BP26012C10 |  | PA-P3 ; 1st Fix, Electrical System (Parking Area)_PB-1 | 36d | 2012-06-10 | 2012-07-23 | PP3BP21114C10 SS, PP3BP09901C10, PP3BP23011C10 | 90.62d | 0d | ELECTRICAL [1297.2 h]; Cost |  |  | CP3PA26001C0 | PP3BP26012C0 | PA | C | P3 | PK | ME | 260 | 12 | PB | N | BILL 2 | B02 | S1 | 1F | R00 | ACF04 | PB-1 | 260 | 1S | MEP | M1F |
| PP3BP21113C10 |  | PA-P3 ; Final Fix, Fire Fighting system (Parking Area)_PB-1 | 12d | 2012-07-10 | 2012-07-24 | PP3BP21124C10, PGLS103331C360, PGLS103331C370, PGLS103331C350, PGLS103331C340, PGLS103331C330, PGLS103391C220, PP2BE09502C0 SS | 125.22d | 0d | MECHANICAL [201.6 h]; Cost |  |  | CP3PA21113C0 | PP3BP21113C0 | PA | C | P3 | PK | ME | 211 | 13 | PB | N | BILL 2 | B02 | S1 | FF | R00 | ACF07 | PB-1 | 211 | FF | MEP |  |
| PP3BP09902C10 |  | PA-P3 ; 2nd coat (Wall & Ceiling) (Parking Area)_PB-1 | 6d | 2012-07-17 | 2012-07-24 | PP3BP09901C10, PGLS103331C360, PGLS103331C370, PGLS103331C350, PGLS103331C340, PGLS103331C330, PGLS103391C220, PP3BP21113C10 FF, PP2BE09502C0 SS | 125.22d | 0d | CEILING PAINT [845 h]; WALL PAINT [183 h]; CEILING PAINT [1053.25 m2]; WALL PAINT [227.5 m2]; Cost | 329 | 957 | CP3PA09903C0 | PP3BP09902C0 | PA | C | P3 | PK | PA | 099 | 02 | PB | N | BILL 2 | B02 | S1 | 02 | R00 | ACF06 | PB-1 | 099 |  |  |  |
| PP3BP26022C10 |  | PA-P3 ; 2nd Fix, Electrical System (Parking Area)_PB-1 | 36d | 2012-07-23 | 2012-09-05 | PP3BP26012C10 | 114.62d | 0d | ELECTRICAL [1297.2 h]; Cost |  |  | CP3PA26005C0 | PP3BP26022C0 | PA | C | P3 | PK | ME | 260 | 22 | PB | N | BILL 2 | B02 | S1 | 2F | R00 | ACF07 | PB-1 | 260 | 2n | MEP |  |
| PP3BP27013C10 |  | PA-P3 ; 1st Fix, ELV system (Parking Area)_PB-1 | 36d | 2012-07-23 | 2012-09-05 | PP3BP09901C10, PP3BP26012C10 | 90.62d | 0d | ELECTRICAL [226.8 h]; Cost |  |  | CP3PA27010C0 | PP3BP27013C0 | PA | C | P3 | PK | ME | 270 | 13 | PB | N | BILL 2 | B02 | S1 | 1F | R00 | ACF04 | PB-1 | 270 | 1S | MEP | M1F |
| PP3BP22011C10 |  | PA-P3 ; Final Fix, Drainage System (Parking Area)_PB-1 | 12d | 2012-07-24 | 2012-08-07 | PP3BP09902C10, PP3BP22025C10, PGLS103331C360, PGLS103331C370, PGLS103331C350, PGLS103331C340, PGLS103331C330, PGLS103391C220, PP2BE09502C0 SS, PP3BP21113C10 | 125.22d | 0d | PLUMBING [538.8 h]; Cost |  |  | CP3PA22011C0 | PP3BP22011C0 | PA | C | P3 | PK | ME | 220 | 11 | PB | N | BILL 2 | B02 | S1 | FF | R00 | ACF07 | PB-1 | 220 | FF | MEP |  |
| PP3BP23019C10 |  | PA-P3 ; Final Fix, CHW / HVAC System (Parking Area)_PB-1 | 12d | 2012-08-07 | 2012-08-23 | PP3BP09902C10, PP3BP23021C10, PGLS103331C360, PGLS103331C370, PGLS103331C350, PGLS103331C340, PGLS103331C330, PGLS103391C220, PP2BE09502C0 SS, PP3BP22011C10 | 125.22d | 10.6d | MECHANICAL [1394.4 h]; Cost |  |  | CP3PA23019C0 | PP3BP23019C0 | PA | C | P3 | PK | ME | 230 | 19 | PB | N | BILL 2 | B02 | S1 | FF | R00 | ACF07 | PB-1 | 230 | FF | MEP |  |
| PP3BP26017C10 |  | PA-P3 ; Final Fix, Electrical System (Parking Area)_PB-1 | 12d | 2012-09-05 | 2012-09-19 | PP3BP09902C10, PP3BP26022C10, PGLS103331C360, PGLS103331C370, PGLS103331C350, PGLS103331C340, PGLS103331C330, PGLS103391C220, PP2BE09502C0 SS, PP3BP23019C10 | 114.62d | 24d | ELECTRICAL [1390.8 h]; Cost |  |  | CP3PA26017C0 | PP3BP26017C0 | PA | C | P3 | PK | ME | 260 | 17 | PB | N | BILL 2 | B02 | S1 | FF | R00 | ACF07 | PB-1 | 260 | FF | MEP |  |
| PP3BP27023C10 |  | PA-P3 ; 2nd Fix, ELV system (Parking Area)_PB-1 | 36d | 2012-09-05 | 2012-10-17 | PP3BP27013C10 | 90.62d | 0d | ELECTRICAL [211.2 h]; Cost |  |  | CP3PA27020C0 | PP3BP27023C0 | PA | C | P3 | PK | ME | 270 | 23 | PB | N | BILL 2 | B02 | S1 | 2F | R00 | ACF07 | PB-1 | 270 | 2n | MEP |  |
| PP3BP27030C10 |  | PA-P3 ; Final Fix, ELV system (Parking Area)_PB-1 | 12d | 2012-10-17 | 2012-11-03 | PP3BP09902C10, PP3BP27023C10, PP3BP27023C10 FF, PGLS103331C360, PGLS103331C370, PGLS103331C350, PGLS103331C340, PGLS103331C330, PGLS103391C220, PP2BE09502C0 SS, PP3BP26017C10 | 90.62d | 0d | ELECTRICAL [367.2 h]; Cost |  |  | CP3PA27030C0 | PP3BP27030C0 | PA | C | P3 | PK | ME | 270 | 30 | PB | N | BILL 2 | B02 | S1 | FF | R00 | ACF07 | PB-1 | 270 | FF | MEP |  |
| PP3BP09903C10 |  | PA-P3 ; Concrete Sealer (Floor) (Parking Area)_PB-1 | 9d | 2012-11-03 | 2012-11-13 | PP3BP21113C10, PP3BP22011C10, PP3BP23019C10, PP3BP26017C10, PP3BP27030C10, PGLS103331C360, PGLS103331C370, PGLS103331C350, PGLS103331C340, PGLS103331C330, PGLS103391C220, PP2BE09502C0 SS | 90.62d | 0d | ASSORTED FLOOR FINISH [2640 h]; ASSORTED FLOOR FINISH [1462.25 m2]; Cost |  |  | AP3PK09903C0 | PP3BP09903C0 | PA | C | P3 | PK | FF | 096 | 03 | PB | N | BILL 2 | B02 | S1 | 05 | R00 | ACF06 | PB-1 | CS |  |  |  |
| PP3BP05509C10 |  | PA-P3 ; Grill & Louvers (Parking Area)_PB-1 | 3.86d | 2012-11-13 | 2012-11-19 | PP3BP09903C10, PGLS103331C360, PGLS103331C370, PGLS103331C350, PGLS103331C340, PGLS103331C330, PGLS103391C220, PP2BE09502C0 SS | 103.76d | 84.53d | SECONDARY STEEL [222 h]; Cost | 328 | 956 | CP3PA09901C0 | PP3AP09901C0 | PA | C | P3 | PK | SW | 055 | 01 | PB | N | BILL 2 | B02 | S1 | 02 | R00 | ACF03 | PB-1 | 056 |  |  |  |
| PP3BP11006C10 |  | PA-P3 ; Wall Protection (WP, CG, WG, FCG) (Parking Area)_PB-1 | 6d | 2012-11-13 | 2012-11-21 | PP3BP09903C10, PGLS103331C360, PGLS103331C370, PGLS103331C350, PGLS103331C340, PGLS103331C330, PGLS103391C220, PP2BE09502C0 SS | 90.62d | 0d | FF&E [51 h]; Cost | 326 | 1001 | CP3PA11001C0 | PP3BP11006C0 | PA | C | P3 | PK | WF | 097 | 06 | PB | N | BILL 2 | B02 | S1 | 03 | R00 | ACF08 | PB-1 | 097 |  |  |  |
| PP3BP11004C10 |  | PA-P3 ; Floor Marking & Signage (Parking Area)_PB-1 | 6d | 2012-11-21 | 2012-11-28 | PP3BP09903C10, PP3BP11006C10, PGLS103331C360, PGLS103331C370, PGLS103331C350, PGLS103331C340, PGLS103331C330, PGLS103391C220, PP2BE09502C0 SS | 90.62d | 0d | SIGNAGES [609 h]; SIGNAGES [84.75 no]; Cost |  |  | AP3PK11004C0 | PP3BP11004C0 | PA | C | P3 | PK | SA | 110 | 04 | PB | N | BILL 2 | B02 | S1 | 09 | R00 | ACF08 | PB-1 | c |  |  |  |
| PP3BP11009C10 |  | PA-P3 ; FF&E (Parking Area)_PB-1 | 5d | 2012-11-28 | 2012-12-05 | PP3BP11004C10, PGLS103331C360, PGLS103331C370, PGLS103331C350, PGLS103331C340, PGLS103331C330, PGLS103391C220, PP2BE09502C0 SS | 90.62d | 71.39d | FF&E [501 h]; Cost |  |  | AP3PK11004C0 | PP3BP11004C0 | PA | C | P3 | PK | SA | 110 | 04 | PB | N | BILL 2 | B02 | S1 | 01 | R00 | ACF08 | PB-1 | a |  |  |  |
|  | BP2 | **PARKING AREA ; Zone PB-2** |  | 2012-06-20 | 2013-01-30 |  |  |  |  |  |  |  |  |  |  |  |  |  |  |  |  |  |  |  |  |  |  |  |  |  |  |  |  |
| PP3BP09901C20 |  | PA-P3 ; Prime & 1st coat (Wall & Ceiling) (Parking Area)_PB-2 | 18d | 2012-06-20 | 2012-07-11 | PGLS103391C160 SS, PGLS703394R02 SS, PGLS703394C0 SS, PGLS103391C140 SS, PGLS103391C260 SS, PGLS103392R02 SS, PGLS103391C170 SS, PGLS103394R02 SS, PGLS103391C190 SS | 44.24d | 0d | CEILING PAINT [2508 h]; WALL PAINT [542 h]; CEILING PAINT [3130 m2]; WALL PAINT [676 m2]; Cost | 328 | 956 | CP3PA09901C0 | PP3BP09901C0 | PA | C | P3 | PK | PA | 099 | 01 | PB | N | BILL 2 | B02 | S1 | 01 | R00 | ACF06 | PB-2 | 099 |  |  |  |
| PP3BP21114C20 |  | PA-P3 ; 1st Fix, Fire Fighting system (Parking Area)_PB-2 | 18d | 2012-07-11 | 2012-08-01 | PP3BP09901C20 | 44.24d | 0d | MECHANICAL [321.6 h]; Cost |  |  | CP3PA21109C0 | PP3BP21114C0 | PA | C | P3 | PK | ME | 211 | 14 | PB | N | BILL 2 | B02 | S1 | 1F | R00 | ACF04 | PB-2 | 211 | 1S | MEP | M1F |
| PP3BP21124C20 |  | PA-P3 ; 2nd Fix, Fire Fighting system (Parking Area)_PB-2 | 30d | 2012-08-01 | 2012-09-08 | PP3BP21114C20 | 58.36d | 0d | MECHANICAL [321.6 h]; Cost |  |  | CP3PA21115C0 | PP3BP21124C0 | PA | C | P3 | PK | ME | 211 | 24 | PB | N | BILL 2 | B02 | S1 | 2F | R00 | ACF07 | PB-2 | 211 | 2n | MEP |  |
| PP3BP22015C20 |  | PA-P3 ; 1st Fix, Plumbing / Drainage System (Parking Area)_PB-2 | 18d | 2012-08-01 | 2012-08-25 | PP3BP21114C20 SS, PP3BP09901C20, PP3BP21114C20 | 44.24d | 0d | PLUMBING [862.8 h]; Cost |  |  | CP3PA22001C0 | PP3BP22015C0 | PA | C | P3 | PK | ME | 220 | 15 | PB | N | BILL 2 | B02 | S1 | 1F | R00 | ACF04 | PB-2 | 220 | 1S | MEP | M1F |
| PP3BP22025C20 |  | PA-P3 ; 2nd Fix, Plumbing / Drainage System (Parking Area)_PB-2 | 30d | 2012-08-25 | 2012-09-29 | PP3BP22015C20 | 62.24d | 0d | PLUMBING [862.8 h]; Cost |  |  | CP3PA22011C0 | PP3BP22025C0 | PA | C | P3 | PK | ME | 220 | 25 | PB | N | BILL 2 | B02 | S1 | 2F | R00 | ACF07 | PB-2 | 220 | 2n | MEP |  |
| PP3BP23011C20 |  | PA-P3 ; 1st Fix, CHW / HVAC System (Parking Area)_PB-2 | 18d | 2012-08-25 | 2012-09-15 | PP3BP22015C20 SS, PP3BP09901C20, PP3BP22015C20 | 44.24d | 0d | MECHANICAL [2334 h]; Cost |  |  | CP3PA23001C0 | PP3BP23011C0 | PA | C | P3 | PK | ME | 230 | 11 | PB | N | BILL 2 | B02 | S1 | 1F | R00 | ACF04 | PB-2 | 230 | 1S | MEP | M1F |
| PP3BP09902C20 |  | PA-P3 ; 2nd coat (Wall & Ceiling) (Parking Area)_PB-2 | 9.88d | 2012-09-08 | 2012-09-19 | PP3BP09901C20, PGLS103331C410, PGLS103331C420, PGLS103331C380, PGLS103331C390, PGLS103331C400, PGLS703394C10, PGLS703394C20, PGLS103391C240, PGLS103391C230, PGLS103371C250, PGLS103391C210, PP3BP21124C20 | 58.36d | 0d | CEILING PAINT [1351 h]; WALL PAINT [292 h]; CEILING PAINT [1685.2 m2]; WALL PAINT [364 m2]; Cost | 329 | 957 | CP3PA09903C0 | PP3BP09902C0 | PA | C | P3 | PK | PA | 099 | 02 | PB | N | BILL 2 | B02 | S1 | 02 | R00 | ACF06 | PB-2 | 099 |  |  |  |
| PP3BP23021C20 |  | PA-P3 ; 2nd Fix, CHW / HVAC System (Parking Area)_PB-2 | 30d | 2012-09-15 | 2012-10-20 | PP3BP23011C20 | 56.24d | 0d | MECHANICAL [2230.8 h]; Cost |  |  | CP3PA23011C0 | PP3BP23021C0 | PA | C | P3 | PK | ME | 230 | 21 | PB | N | BILL 2 | B02 | S1 | 2F | R00 | ACF07 | PB-2 | 230 | 2n | MEP |  |
| PP3BP26012C20 |  | PA-P3 ; 1st Fix, Electrical System (Parking Area)_PB-2 | 18d | 2012-09-15 | 2012-10-06 | PP3BP21114C20 SS, PP3BP09901C20, PP3BP23011C20 | 44.24d | 0d | ELECTRICAL [2074.8 h]; Cost |  |  | CP3PA26001C0 | PP3BP26012C0 | PA | C | P3 | PK | ME | 260 | 12 | PB | N | BILL 2 | B02 | S1 | 1F | R00 | ACF04 | PB-2 | 260 | 1S | MEP | M1F |
| PP3BP21113C20 |  | PA-P3 ; Final Fix, Fire Fighting system (Parking Area)_PB-2 | 12d | 2012-09-19 | 2012-10-03 | PP3BP09902C20, PP3BP21124C20, PGLS103331C410, PGLS103331C420, PGLS103331C380, PGLS103331C390, PGLS103331C400, PGLS703394C10, PGLS703394C20, PGLS103391C240, PGLS103391C230, PGLS103371C250, PGLS103391C210 | 58.36d | 0d | MECHANICAL [321.6 h]; Cost |  |  | CP3PA21113C0 | PP3BP21113C0 | PA | C | P3 | PK | ME | 211 | 13 | PB | N | BILL 2 | B02 | S1 | FF | R00 | ACF07 | PB-2 | 211 | FF | MEP |  |
| PP3BP22011C20 |  | PA-P3 ; Final Fix, Drainage System (Parking Area)_PB-2 | 12d | 2012-10-03 | 2012-10-17 | PP3BP09902C20, PP3BP22025C20, PGLS103331C410, PGLS103331C420, PGLS103331C380, PGLS103331C390, PGLS103331C400, PGLS703394C10, PGLS703394C20, PGLS103391C240, PGLS103391C230, PGLS103371C250, PGLS103391C210, PP3BP21113C20 | 58.36d | 2.12d | PLUMBING [862.8 h]; Cost |  |  | CP3PA22011C0 | PP3BP22011C0 | PA | C | P3 | PK | ME | 220 | 11 | PB | N | BILL 2 | B02 | S1 | FF | R00 | ACF07 | PB-2 | 220 | FF | MEP |  |
| PP3BP26022C20 |  | PA-P3 ; 2nd Fix, Electrical System (Parking Area)_PB-2 | 30d | 2012-10-06 | 2012-11-12 | PP3BP26012C20 | 50.24d | 0d | ELECTRICAL [2074.8 h]; Cost |  |  | CP3PA26005C0 | PP3BP26022C0 | PA | C | P3 | PK | ME | 260 | 22 | PB | N | BILL 2 | B02 | S1 | 2F | R00 | ACF07 | PB-2 | 260 | 2n | MEP |  |
| PP3BP27013C20 |  | PA-P3 ; 1st Fix, ELV system (Parking Area)_PB-2 | 18d | 2012-10-06 | 2012-10-29 | PP3BP09901C20, PP3BP26012C20 | 44.24d | 0d | ELECTRICAL [362.4 h]; Cost |  |  | CP3PA27010C0 | PP3BP27013C0 | PA | C | P3 | PK | ME | 270 | 13 | PB | N | BILL 2 | B02 | S1 | 1F | R00 | ACF04 | PB-2 | 270 | 1S | MEP | M1F |
| PP3BP23019C20 |  | PA-P3 ; Final Fix, CHW / HVAC System (Parking Area)_PB-2 | 12d | 2012-10-20 | 2012-11-05 | PP3BP09902C20, PP3BP23021C20, PGLS103331C410, PGLS103331C420, PGLS103331C380, PGLS103331C390, PGLS103331C400, PGLS703394C10, PGLS703394C20, PGLS103391C240, PGLS103391C230, PGLS103371C250, PGLS103391C210, PP3BP22011C20 | 56.24d | 6d | MECHANICAL [2230.8 h]; Cost |  |  | CP3PA23019C0 | PP3BP23019C0 | PA | C | P3 | PK | ME | 230 | 19 | PB | N | BILL 2 | B02 | S1 | FF | R00 | ACF07 | PB-2 | 230 | FF | MEP |  |
| PP3BP27023C20 |  | PA-P3 ; 2nd Fix, ELV system (Parking Area)_PB-2 | 30d | 2012-10-29 | 2012-12-05 | PP3BP27013C20 | 44.24d | 0d | ELECTRICAL [337.2 h]; Cost |  |  | CP3PA27020C0 | PP3BP27023C0 | PA | C | P3 | PK | ME | 270 | 23 | PB | N | BILL 2 | B02 | S1 | 2F | R00 | ACF07 | PB-2 | 270 | 2n | MEP |  |
| PP3BP26017C20 |  | PA-P3 ; Final Fix, Electrical System (Parking Area)_PB-2 | 12d | 2012-11-12 | 2012-11-27 | PP3BP09902C20, PP3BP26022C20, PGLS103331C410, PGLS103331C420, PGLS103331C380, PGLS103331C390, PGLS103331C400, PGLS703394C10, PGLS703394C20, PGLS103391C240, PGLS103391C230, PGLS103371C250, PGLS103391C210, PP3BP23019C20 | 50.24d | 6d | ELECTRICAL [2224.8 h]; Cost |  |  | CP3PA26017C0 | PP3BP26017C0 | PA | C | P3 | PK | ME | 260 | 17 | PB | N | BILL 2 | B02 | S1 | FF | R00 | ACF07 | PB-2 | 260 | FF | MEP |  |
| PP3BP27030C20 |  | PA-P3 ; Final Fix, ELV system (Parking Area)_PB-2 | 12d | 2012-12-05 | 2012-12-19 | PP3BP09902C20, PP3BP27023C20, PP3BP27023C20 FF, PGLS103331C410, PGLS103331C420, PGLS103331C380, PGLS103331C390, PGLS103331C400, PGLS703394C10, PGLS703394C20, PGLS103391C240, PGLS103391C230, PGLS103371C250, PGLS103391C210, PP3BP26017C20 | 44.24d | 0d | ELECTRICAL [588 h]; Cost |  |  | CP3PA27030C0 | PP3BP27030C0 | PA | C | P3 | PK | ME | 270 | 30 | PB | N | BILL 2 | B02 | S1 | FF | R00 | ACF07 | PB-2 | 270 | FF | MEP |  |
| PP3BP09903C20 |  | PA-P3 ; Concrete Sealer (Floor) (Parking Area)_PB-2 | 14d | 2012-12-19 | 2013-01-06 | PP3BP21113C20, PP3BP22011C20, PP3BP23019C20, PP3BP26017C20, PP3BP27030C20, PGLS103331C410, PGLS103331C420, PGLS103331C380, PGLS103331C390, PGLS103331C400, PGLS703394C10, PGLS703394C20, PGLS103391C240, PGLS103391C230, PGLS103371C250, PGLS103391C210, PV10P303306R2 FF | 44.24d | 0d | ASSORTED FLOOR FINISH [4216 h]; ASSORTED FLOOR FINISH [2339.6 m2]; Cost |  |  | AP3PK09903C0 | PP3BP09903C0 | PA | C | P3 | PK | FF | 096 | 03 | PB | N | BILL 2 | B02 | S1 | 05 | R00 | ACF06 | PB-2 | CS |  |  |  |
| PP3BP05509C20 |  | PA-P3 ; Grill & Louvers (Parking Area)_PB-2 | 5.69d | 2013-01-06 | 2013-01-13 | PP3BP09903C20, PGLS103331C410, PGLS103331C420, PGLS103331C380, PGLS103331C390, PGLS103331C400, PGLS703394C10, PGLS703394C20, PGLS103391C240, PGLS103391C230, PGLS103371C250, PGLS103391C210 | 58.55d | 39.31d | SECONDARY STEEL [356 h]; Cost | 328 | 956 | CP3PA09901C0 | PP3AP09901C0 | PA | C | P3 | PK | SW | 055 | 01 | PB | N | BILL 2 | B02 | S1 | 02 | R00 | ACF03 | PB-2 | 056 |  |  |  |
| PP3BP11006C20 |  | PA-P3 ; Wall Protection (WP, CG, WG, FCG) (Parking Area)_PB-2 | 6d | 2013-01-06 | 2013-01-13 | PP3BP09903C20, PGLS103331C410, PGLS103331C420, PGLS103331C380, PGLS103331C390, PGLS103331C400, PGLS703394C10, PGLS703394C20, PGLS103391C240, PGLS103391C230, PGLS103371C250, PGLS103391C210 | 44.24d | 0d | FF&E [82 h]; Cost | 326 | 1001 | CP3PA11001C0 | PP3BP11006C0 | PA | C | P3 | PK | WF | 097 | 06 | PB | N | BILL 2 | B02 | S1 | 03 | R00 | ACF08 | PB-2 | 097 |  |  |  |
| PP3BP11004C20 |  | PA-P3 ; Floor Marking & Signage (Parking Area)_PB-2 | 9d | 2013-01-13 | 2013-01-23 | PP3BP09903C20, PP3BP11006C20, PGLS103331C410, PGLS103331C420, PGLS103331C380, PGLS103331C390, PGLS103331C400, PGLS703394C10, PGLS703394C20, PGLS103391C240, PGLS103391C230, PGLS103371C250, PGLS103391C210 | 44.24d | 0d | SIGNAGES [974 h]; SIGNAGES [135.6 no]; Cost |  |  | AP3PK11004C0 | PP3BP11004C0 | PA | C | P3 | PK | SA | 110 | 04 | PB | N | BILL 2 | B02 | S1 | 09 | R00 | ACF08 | PB-2 | c |  |  |  |
| PP3BP11009C20 |  | PA-P3 ; FF&E (Parking Area)_PB-2 | 5d | 2013-01-23 | 2013-01-30 | PP3BP11004C20, PGLS103331C410, PGLS103331C420, PGLS103331C380, PGLS103331C390, PGLS103331C400, PGLS703394C10, PGLS703394C20, PGLS103391C240, PGLS103391C230, PGLS103371C250, PGLS103391C210 | 44.24d | 25d | FF&E [801 h]; Cost |  |  | AP3PK11004C0 | PP3BP11004C0 | PA | C | P3 | PK | SA | 110 | 04 | PB | N | BILL 2 | B02 | S1 | 01 | R00 | ACF08 | PB-2 | a |  |  |  |

| ID | WBS | Activity | Duration | Start | Finish | Predecessors | Total float | Free float | Resources | Change Order # | NEW ACTIVITY ID | change id | IDDD | CCAD BUILDING(SET) | CCAD PHASE(SET) | CCAD FLOOR(SET) | CCAD ZONE(SET) | CCAD WORK(SET) | CCAD SECTION(SET) | CCAD SERIAL No.(SET) | CCAD Carpark code(SET) | CCAD Carpark district code(set) | CCAD CBS(SET) | CCAD BILL(SET) | CCAD HANDOVER(SET) | CCAD TAG(SET) | CCAD REV(SET) | CCADACF (SET) | FSP CODE | CCAD SSCF | CCAD SUB ZONE MEP(SET) | CCAD CSA | Act Selector % | CCAD DIVISION(SET) | CCAD MEQ |
| --- | --- | --- | --- | --- | --- | --- | --- | --- | --- | --- | --- | --- | --- | --- | --- | --- | --- | --- | --- | --- | --- | --- | --- | --- | --- | --- | --- | --- | --- | --- | --- | --- | --- | --- | --- |
|  | BP3 | **PARKING AREA ; Zone PB-3** |  | 2011-12-25 | 2012-11-18 |  |  |  |  |  |  |  |  |  |  |  |  |  |  |  |  |  |  |  |  |  |  |  |  |  |  |  |  |  |  |
| PP3BP09901C30 |  | PA-P3 ; Prime & 1st coat (Wall & Ceiling) (Parking Area)_PB-3 | 18d | 2011-12-25 | 2012-01-16 | PGLS103391C180 SS, PGLS103391C200 SS | 37.88d | 0d | CEILING PAINT [2195 h]; WALL PAINT [475 h]; CEILING PAINT [2738.75 m2]; WALL PAINT [591.5 m2]; Cost | 328 | 956 | CP3PA09901C0 | PP3BP09901C0 | PA | C | P3 | PK | PA | 099 | 01 | PB | N | BILL 2 | B02 | S1 | 01 | R00 | ACF06 | PB-3 | 099 |  |  |  |  |  |
| PP3BP21114C30 |  | PA-P3 ; 1st Fix, Fire Fighting system (Parking Area)_PB-3 | 36d | 2012-01-16 | 2012-02-28 | PP3BP09901C30 | 37.88d | 0d | MECHANICAL [282 h]; Cost |  |  | CP3PA21109C0 | PP3BP21114C0 | PA | C | P3 | PK | ME | 211 | 14 | PB | N | BILL 2 | B02 | S1 | 1F | R00 | ACF04 | PB-3 | 211 | 1S | MEP | M1F |  |  |
| PP3BP21124C30 |  | PA-P3 ; 2nd Fix, Fire Fighting system (Parking Area)_PB-3 | 36d | 2012-02-28 | 2012-04-10 | PP3BP21114C30 | 200.88d | 77.65d | MECHANICAL [282 h]; Cost |  |  | CP3PA21115C0 | PP3BP21124C0 | PA | C | P3 | PK | ME | 211 | 24 | PB | N | BILL 2 | B02 | S1 | 2F | R00 | ACF07 | PB-3 | 211 | 2n | MEP |  |  |  |
| PP3BP22015C30 |  | PA-P3 ; 1st Fix, Plumbing / Drainage System (Parking Area)_PB-3 | 36d | 2012-02-28 | 2012-04-10 | PP3BP21114C30 SS, PP3BP09901C30, PP3BP21114C30 | 104.88d | 0d | PLUMBING [754.8 h]; Cost |  |  | CP3PA22001C0 | PP3BP22015C0 | PA | C | P3 | PK | ME | 220 | 15 | PB | N | BILL 2 | B02 | S1 | 1F | R00 | ACF04 | PB-3 | 220 | 1S | MEP | M1F |  |  |
| PP3BP22025C30 |  | PA-P3 ; 2nd Fix, Plumbing / Drainage System (Parking Area)_PB-3 | 36d | 2012-04-10 | 2012-05-22 | PP3BP22015C30 | 176.88d | 53.65d | PLUMBING [754.8 h]; Cost |  |  | CP3PA22011C0 | PP3BP22025C0 | PA | C | P3 | PK | ME | 220 | 25 | PB | N | BILL 2 | B02 | S1 | 2F | R00 | ACF07 | PB-3 | 220 | 2n | MEP |  |  |  |
| PP3BP23011C30 |  | PA-P3 ; 1st Fix, CHW / HVAC System (Parking Area)_PB-3 | 36d | 2012-04-10 | 2012-05-22 | PP3BP22015C30 SS, PP3BP09901C30, PP3BP22015C30 | 104.88d | 0d | MECHANICAL [2042.4 h]; Cost |  |  | CP3PA23001C0 | PP3BP23011C0 | PA | C | P3 | PK | ME | 230 | 11 | PB | N | BILL 2 | B02 | S1 | 1F | R00 | ACF04 | PB-3 | 230 | 1S | MEP | M1F |  |  |
| PP3BP23021C30 |  | PA-P3 ; 2nd Fix, CHW / HVAC System (Parking Area)_PB-3 | 36d | 2012-05-22 | 2012-07-04 | PP3BP23011C30 | 152.88d | 29.65d | MECHANICAL [1951.2 h]; Cost |  |  | CP3PA23011C0 | PP3BP23021C0 | PA | C | P3 | PK | ME | 230 | 21 | PB | N | BILL 2 | B02 | S1 | 2F | R00 | ACF07 | PB-3 | 230 | 2n | MEP |  |  |  |
| PP3BP26012C30 |  | PA-P3 ; 1st Fix, Electrical System (Parking Area)_PB-3 | 36d | 2012-05-22 | 2012-07-04 | PP3BP21114C30 SS, PP3BP09901C30, PP3BP23011C30 | 104.88d | 0d | ELECTRICAL [1815.6 h]; Cost |  |  | CP3PA26001C0 | PP3BP26012C0 | PA | C | P3 | PK | ME | 260 | 12 | PB | N | BILL 2 | B02 | S1 | 1F | R00 | ACF04 | PB-3 | 260 | 1S | MEP | M1F |  |  |
| PP3BP26022C30 |  | PA-P3 ; 2nd Fix, Electrical System (Parking Area)_PB-3 | 36d | 2012-07-04 | 2012-08-15 | PP3BP26012C30 | 128.88d | 5.65d | ELECTRICAL [1815.6 h]; Cost |  |  | CP3PA26005C0 | PP3BP26022C0 | PA | C | P3 | PK | ME | 260 | 22 | PB | N | BILL 2 | B02 | S1 | 2F | R00 | ACF07 | PB-3 | 260 | 2n | MEP |  |  |  |
| PP3BP27013C30 |  | PA-P3 ; 1st Fix, ELV system (Parking Area)_PB-3 | 36d | 2012-07-04 | 2012-08-15 | PP3BP09901C30, PP3BP26012C30 | 104.88d | 0d | ELECTRICAL [318 h]; Cost |  |  | CP3PA27010C0 | PP3BP27013C0 | PA | C | P3 | PK | ME | 270 | 13 | PB | N | BILL 2 | B02 | S1 | 1F | R00 | ACF04 | PB-3 | 270 | 1S | MEP | M1F |  |  |
| PP3BP21113C30 |  | PA-P3 ; Final Fix, Fire Fighting system (Parking Area)_PB-3 | 12d | 2012-07-10 | 2012-07-24 | PP3BP21124C30, PGLS103331C360, PGLS103331C370, PGLS103331C350, PGLS103331C340, PGLS103331C330, PGLS103391C220, PP2BE09502C0 SS | 123.22d | 0d | MECHANICAL [282 h]; Cost |  |  | CP3PA21113C0 | PP3BP21113C0 | PA | C | P3 | PK | ME | 211 | 13 | PB | N | BILL 2 | B02 | S1 | FF | R00 | ACF07 | PB-3 | 211 | FF | MEP |  |  |  |
| PP3BP09902C30 |  | PA-P3 ; 2nd coat (Wall & Ceiling) (Parking Area)_PB-3 | 9d | 2012-07-14 | 2012-07-24 | PP3BP09901C30, PGLS103331C360, PGLS103331C370, PGLS103331C350, PGLS103331C340, PGLS103331C330, PGLS103391C220, PP3BP21113C30 FF | 123.22d | 0d | CEILING PAINT [1181 h]; WALL PAINT [255 h]; CEILING PAINT [1474.55 m2]; WALL PAINT [318.5 m2]; Cost | 329 | 957 | CP3PA09903C0 | PP3BP09902C0 | PA | C | P3 | PK | PA | 099 | 02 | PB | N | BILL 2 | B02 | S1 | 02 | R00 | ACF06 | PB-3 | 099 |  |  |  |  |  |
| PP3BP22011C30 |  | PA-P3 ; Final Fix, Drainage System (Parking Area)_PB-3 | 12d | 2012-07-24 | 2012-08-07 | PP3BP09902C30, PP3BP22025C30, PGLS103331C360, PGLS103331C370, PGLS103331C350, PGLS103331C340, PGLS103331C330, PGLS103391C220, PP2BE09502C0 SS, PP3BP21113C30 | 123.22d | 0d | PLUMBING [754.8 h]; Cost |  |  | CP3PA22011C0 | PP3BP22011C0 | PA | C | P3 | PK | ME | 220 | 11 | PB | N | BILL 2 | B02 | S1 | FF | R00 | ACF07 | PB-3 | 220 | FF | MEP |  |  |  |
| PP3BP23019C30 |  | PA-P3 ; Final Fix, CHW / HVAC System (Parking Area)_PB-3 | 12d | 2012-08-07 | 2012-08-23 | PP3BP09902C30, PP3BP23021C30, PGLS103331C360, PGLS103331C370, PGLS103331C350, PGLS103331C340, PGLS103331C330, PGLS103391C220, PP2BE09502C0 SS, PP3BP22011C30 | 123.22d | 0d | MECHANICAL [1951.2 h]; Cost |  |  | CP3PA23019C0 | PP3BP23019C0 | PA | C | P3 | PK | ME | 230 | 19 | PB | N | BILL 2 | B02 | S1 | FF | R00 | ACF07 | PB-3 | 230 | FF | MEP |  |  |  |
| PP3BP27023C30 |  | PA-P3 ; 2nd Fix, ELV system (Parking Area)_PB-3 | 36d | 2012-08-15 | 2012-09-29 | PP3BP27013C30 | 104.88d | 0d | ELECTRICAL [295.2 h]; Cost |  |  | CP3PA27020C0 | PP3BP27023C0 | PA | C | P3 | PK | ME | 270 | 23 | PB | N | BILL 2 | B02 | S1 | 2F | R00 | ACF07 | PB-3 | 270 | 2n | MEP |  |  |  |
| PP3BP26017C30 |  | PA-P3 ; Final Fix, Electrical System (Parking Area)_PB-3 | 12d | 2012-08-23 | 2012-09-06 | PP3BP09902C30, PP3BP26022C30, PGLS103331C360, PGLS103331C370, PGLS103331C350, PGLS103331C340, PGLS103331C330, PGLS103391C220, PP2BE09502C0 SS, PP3BP23019C30 | 123.22d | 18.35d | ELECTRICAL [1946.4 h]; Cost |  |  | CP3PA26017C0 | PP3BP26017C0 | PA | C | P3 | PK | ME | 260 | 17 | PB | N | BILL 2 | B02 | S1 | FF | R00 | ACF07 | PB-3 | 260 | FF | MEP |  |  |  |
| PP3BP27030C30 |  | PA-P3 ; Final Fix, ELV system (Parking Area)_PB-3 | 12d | 2012-09-29 | 2012-10-13 | PP3BP09902C30, PP3BP27023C30, PP3BP27023C30 FF, PGLS103331C360, PGLS103331C370, PGLS103331C350, PGLS103331C340, PGLS103331C330, PGLS103391C220, PP2BE09502C0 SS, PP3BP26017C30 | 104.88d | 0d | ELECTRICAL [514.8 h]; Cost |  |  | CP3PA27030C0 | PP3BP27030C0 | PA | C | P3 | PK | ME | 270 | 30 | PB | N | BILL 2 | B02 | S1 | FF | R00 | ACF07 | PB-3 | 270 | FF | MEP |  |  |  |
| PP3BP09903C30 |  | PA-P3 ; Concrete Sealer (Floor) (Parking Area)_PB-3 | 8.88d | 2012-10-13 | 2012-10-22 | PP3BP21113C30, PP3BP22011C30, PP3BP23019C30, PP3BP26017C30, PP3BP27030C30, PGLS103331C360, PGLS103331C370, PGLS103331C350, PGLS103331C340, PGLS103331C330, PGLS103391C220, PP2BE09502C0 SS | 104.88d | 0d | ASSORTED FLOOR FINISH [3688 h]; ASSORTED FLOOR FINISH [2047.15 m2]; Cost |  |  | AP3PK09903C0 | PP3BP09903C0 | PA | C | P3 | PK | FF | 096 | 03 | PB | N | BILL 2 | B02 | S1 | 05 | R00 | ACF06 | PB-3 | CS |  |  |  |  |  |
| PP3BP05509C30 |  | PA-P3 ; Grill & Louvers (Parking Area)_PB-3 | 5.82d | 2012-10-23 | 2012-10-31 | PP3BP09903C30, PGLS103331C360, PGLS103331C370, PGLS103331C350, PGLS103331C340, PGLS103331C330, PGLS103391C220, PP2BE09502C0 SS | 118.18d | 98.95d | SECONDARY STEEL [311 h]; Cost | 328 | 956 | CP3PA09901C0 | PP3AP09901C0 | PA | C | P3 | PK | SW | 055 | 01 | PB | N | BILL 2 | B02 | S1 | 02 | R00 | ACF03 | PB-3 | 056 |  |  |  |  |  |
| PP3BP11006C30 |  | PA-P3 ; Wall Protection (WP, CG, WG, FCG) (Parking Area)_PB-3 | 6d | 2012-10-23 | 2012-10-31 | PP3BP09903C30, PGLS103331C360, PGLS103331C370, PGLS103331C350, PGLS103331C340, PGLS103331C330, PGLS103391C220, PP2BE09502C0 SS | 104.88d | 0d | FF&E [72 h]; Cost | 326 | 1001 | CP3PA11001C0 | PP3BP11006C0 | PA | C | P3 | PK | WF | 097 | 06 | PB | N | BILL 2 | B02 | S1 | 03 | R00 | ACF08 | PB-3 | 097 |  |  |  |  |  |
| PP3BP11004C30 |  | PA-P3 ; Floor Marking & Signage (Parking Area)_PB-3 | 8.12d | 2012-11-01 | 2012-11-11 | PP3BP09903C30, PP3BP11006C30, PGLS103331C360, PGLS103331C370, PGLS103331C350, PGLS103331C340, PGLS103331C330, PGLS103391C220, PP2BE09502C0 SS | 104.88d | 0d | SIGNAGES [853 h]; SIGNAGES [118.65 no]; Cost |  |  | AP3PK11004C0 | PP3BP11004C0 | PA | C | P3 | PK | SA | 110 | 04 | PB | N | BILL 2 | B02 | S1 | 09 | R00 | ACF08 | PB-3 | c |  |  |  |  |  |
| PP3BP11009C30 |  | PA-P3 ; FF&E (Parking Area)_PB-3 | 5d | 2012-11-11 | 2012-11-18 | PP3BP11004C30, PP3GN10201R02 FF, PGLS103331C360, PGLS103331C370, PGLS103331C350, PGLS103331C340, PGLS103331C330, PGLS103391C220, PP2BE09502C0 SS | 104.88d | 85.64d | FF&E [701 h]; Cost |  |  | AP3PK11004C0 | PP3BP11004C0 | PA | C | P3 | PK | SA | 110 | 04 | PB | N | BILL 2 | B02 | S1 | 01 | R00 | ACF08 | PB-3 | a |  |  |  |  |  |
|  | BE1 | **ELECTRICAL ROOMS (2 NOS.) ; Zone PB-1** |  | 2012-01-30 | 2012-10-01 |  |  |  |  |  |  |  |  |  |  |  |  |  |  |  |  |  |  |  |  |  |  |  |  |  |  |  |  |  |  |
| PP3BE09903C0 |  | PA-P3 ; Ceiling Prime & 1st coat (Elec RM)_PB-1 | 18d | 2012-01-30 | 2012-02-21 | PGLS103391C100, PGLS103391C110 | 39.23d | 0d | ASSORTED CEILING FINISH [39 h]; Cost |  | 1544 | CP2ME09905C0 | PP3BE09903C0 | PA | C | P3 | ER | PA | 099 | 03 | PB | N | BILL 2 | B02 | S1 | 01 | R00 | ACF06 | PB-1 | 099 |  |  |  |  |  |
| PP3BE04001C0 |  | PA-P3 ; Block Wall Works (Elec RM)_PB-1 | 30d | 2012-02-21 | 2012-03-27 | PP3BE09903C0 | 142.62d | 0d | BLOCKWORKS [322 h]; BLOCKWORKS [92 m2]; Cost |  |  | AP3ER04001C0 | PP3BE04001C0 | PA | C | P3 | ER | BL | 040 | 01 | PB | N | BILL 2 | B02 | S1 | BL | R00 | ACF06 | PB-1 | 040 |  |  |  |  |  |
| PP3BE09201C0 |  | PA-P3 ; Metal Studs (Elec RM)_PB-1 | 9.88d | 2012-03-27 | 2012-04-08 | PP3BE04001C0 | 207.62d | 0d | PARTITIONS [29 h]; PARTITIONS [4 m]; Cost | 313 | 1372 | CP2ME09201C0 | PP3BE09201C0 | PA | C | P3 | ER | PT | 092 | 01 | PB | N | BILL 2 | B02 | S1 | 1F | R00 | ACF06 | PB-1 | 092 |  | GP | PMS |  |  |
| PP3BE23001C0 |  | PA-P3 ; 1st Fix, Inst. of Supports for MEP (Elec RM)_PB-1 | 12d | 2012-03-27 | 2012-04-10 | PP3BE04001C0 | 142.62d | 0d | MECHANICAL [625.2 h]; Cost |  |  | CP2ME23010C0 | PP3BE23001C0 | PA | C | P3 | ER | ME | 230 | 01 | PB | N | BILL 2 | B02 | S1 | 1F | R00 | ACF04 | PB-1 | 230 | 1S | MEP | M1F |  |  |
| PP3BE08102C0 |  | PA-P3 ; Metal Door Frames (Elec RM)_PB-1 | 11.88d | 2012-04-08 | 2012-04-22 | OGNMU00027S0, PP3BE09201C0, GNHE08101C0 | 242.88d | 94.65d | METAL DOORS [29 h]; Cost | 316 | 1374 | CP2ME08101C0 | PP3BE08102C0 | PA | C | P3 | ER | DO | 081 | 02 | PB | N | BILL 2 | B02 | S1 | DF | R00 | ACF06 | PB-1 | 081 |  |  |  | 08 |  |
| PP3BE09202C0 |  | PA-P3 ; Partitions 1st face (Elec RM)_PB-1 | 18d | 2012-04-10 | 2012-05-01 | PP3BE09201C0 SS+12d | 207.62d | 59.4d | PARTITIONS [4 m]; PARTITIONS [16 h]; Cost | 314 | 1373 | CP2ME09203C0 | PP3BE09202C0 | PA | C | P3 | ER | PT | 092 | 02 | PB | N | BILL 2 | B02 | S1 | 2F | R00 | ACF06 | PB-1 | 092 |  | GP | P1F |  |  |
| PP3BE23002C0 |  | PA-P3 ; 1st Fix, Inst of CHW pipe (Elec RM)_PB-1 | 30d | 2012-04-10 | 2012-05-15 | PP3BE23001C0, PP3BE04001C0 | 142.62d | 0d | MECHANICAL [3097.2 h]; Cost |  |  | CP2ME23012C0 | PP3BE23002C0 | PA | C | P3 | ER | ME | 230 | 02 | PB | N | BILL 2 | B02 | S1 | 1F | R00 | ACF04 | PB-1 | 230 | 1S | MEP | M1F |  |  |
| PP3BE23003C0 |  | PA-P3 ; 1st Fix, Inst of Ducting (Elec RM)_PB-1 | 30d | 2012-04-10 | 2012-05-15 | PP3BE23001C0, PP3BE23002C0 SS, PP3BE04001C0 | 142.62d | 0d | MECHANICAL [3948 h]; Cost |  |  | CP2ME23014C0 | PP3BE23003C0 | PA | C | P3 | ER | ME | 230 | 03 | PB | N | BILL 2 | B02 | S1 | 1F | R00 | ACF04 | PB-1 | 230 | 1S | MEP | M1F |  |  |
| PP3BE26001C0 |  | PA-P3 ; 1st Fix, Inst of Trunking/Conduiting (Elec RM)_PB-1 | 30d | 2012-04-10 | 2012-05-15 | PP3BE23001C0, PP3BE04001C0 | 172.62d | 0d | ELECTRICAL [192 h]; Cost |  |  | CP2ME26010C0 | PP3BE26001C0 | PA | C | P3 | ER | ME | 260 | 01 | PB | N | BILL 2 | B02 | S1 | 1F | R00 | ACF04 | PB-1 | 260 | 1S | MEP | M1F |  |  |
| PP3BE09902C0 |  | PA-P3 ; Wall Prime & 1st coat (Elec RM)_PB-1 | 18d | 2012-04-14 | 2012-05-05 | PP3BE04001C0 FS+15d | 189.62d | 0d | WALL PAINT [305 h]; WALL PAINT [379 m2]; Cost | 328 | 1378 | CP2ME09901C0 | PP3BE09902C0 | PA | C | P3 | ER | PA | 099 | 02 | PB | N | BILL 2 | B02 | S1 | 01 | R00 | ACF06 | PB-1 | 099 |  |  |  |  |  |
| PP3BE08107C0 |  | PA-P3 ; Access Floor (Elec RM)_PB-1 | 12d | 2012-05-05 | 2012-05-19 | PP3BE09902C0 | 189.62d | 0d | ASSORTED FLOOR FINISH [96 h]; ASSORTED FLOOR FINISH [51 m2]; Cost | 317 | 1375 | CP2ER08105C0 |  | PA | C | P3 | ER | FF | 096 | 07 | PB | N | BILL 2 | B02 | S1 | 04 | R00 | ACF06 | PB-1 | AF |  |  |  | 08 |  |
| PP3BE23004C0 |  | PA-P3 ; 1st Fix, Inst of VCD's/FD's (Elec RM)_PB-1 | 30d | 2012-05-15 | 2012-06-20 | PP3BE23003C0 SS, PP3BE04001C0, PP3BE23003C0 | 156.62d | 0d | MECHANICAL [1168.8 h]; Cost |  |  | CP2ME23016C0 | PP3BE23004C0 | PA | C | P3 | ER | ME | 230 | 04 | PB | N | BILL 2 | B02 | S1 | 1F | R00 | ACF04 | PB-1 | 230 | 1S | MEP | M1F |  |  |
| PP3BE23007C0 |  | PA-P3 ; 2nd Fix, Inst of VAV'S CHW connection (Elec RM)_PB-1 | 30d | 2012-05-15 | 2012-06-20 | PP3BE23002C0 | 156.62d | 0d | MECHANICAL [50.4 h]; Cost |  |  | CP2ME23020C0 | PP3BE23007C0 | PA | C | P3 | ER | ME | 230 | 07 | PB | N | BILL 2 | B02 | S1 | 2F | R00 | ACF07 | PB-1 | 230 | 2n | MEP |  |  |  |
| PP3BE23009C0 |  | PA-P3 ; 2nd Fix, Inst of VCD's/FD's (Elec RM)_PB-1 | 30d | 2012-05-15 | 2012-06-20 | PP3BE23003C0 | 156.62d | 0d | MECHANICAL [1168.8 h]; Cost |  |  | CP2ME23024C0 | PP3BE23009C0 | PA | C | P3 | ER | ME | 230 | 09 | PB | N | BILL 2 | B02 | S1 | 2F | R00 | ACF07 | PB-1 | 230 | 2n | MEP |  |  |  |
| PP3BE23010C0 |  | PA-P3 ; 2nd Fix, Insulation of CHW pipe & Duct (Elec RM)_PB-1 | 30d | 2012-05-15 | 2012-06-20 | PP3BE23001C0, PP3BE23002C0 | 156.62d | 0d | MECHANICAL [3702 h]; Cost |  |  | CP2ME23026C0 | PP3BE23010C0 | PA | C | P3 | ER | ME | 230 | 10 | PB | N | BILL 2 | B02 | S1 | 2F | R00 | ACF07 | PB-1 | 230 | 2n | MEP |  |  |  |
| PP3BE26002C0 |  | PA-P3 ; 1st Fix, Inst of Cable Tray (Elec RM)_PB-1 | 30d | 2012-05-15 | 2012-06-20 | PP3BE23001C0, PP3BE04001C0, PP3BE23003C0 | 142.62d | 0d | ELECTRICAL [63.6 h]; Cost |  |  | CP2ME26012C0 | PP3BE26002C0 | PA | C | P3 | ER | ME | 260 | 02 | PB | N | BILL 2 | B02 | S1 | 1F | R00 | ACF04 | PB-1 | 260 | 1S | MEP | M1F |  |  |
| PP3BE26007C0 |  | PA-P3 ; 2nd Fix, Wiring for Power/Lighting/Emergency (Elec RM)_PB-1 | 30d | 2012-05-15 | 2012-06-20 | PP3BE26001C0 | 172.62d | 30d | ELECTRICAL [452.4 h]; Cost |  |  | CP2ME26020C0 | PP3BE26007C0 | PA | C | P3 | ER | ME | 260 | 07 | PB | N | BILL 2 | B02 | S1 | 2F | R00 | ACF07 | PB-1 | 260 | 2n | MEP |  |  |  |
| PP3BE27002C0 |  | PA-P3 ; 1st Fix, Inst of Trunking for ELV system (Elec RM)_PB-1 | 30d | 2012-05-15 | 2012-06-20 | PP3BE23001C0, PP3BE04001C0, PP3BE23003C0 | 142.62d | 0d | ELECTRICAL [535.2 h]; Cost |  |  | CP2ME27010C0 | PP3BE27002C0 | PA | C | P3 | ER | ME | 270 | 02 | PB | N | BILL 2 | B02 | S1 | 1F | R00 | ACF04 | PB-1 | 270 | 1S | MEP | M1F |  |  |
| PP3BE23008C0 |  | PA-P3 ; 2nd Fix, Inst of Equipment (FCU,FAN,PUMP) (Elec RM)_PB-1 | 30d | 2012-05-19 | 2012-06-24 | PP3BE26009C0 FF | 189.62d | 47d | MECHANICAL [2246.4 h]; Cost |  |  | CP2ME23022C0 | PP3BE23008C0 | PA | C | P3 | ER | ME | 230 | 08 | PB | N | BILL 2 | B02 | S1 | 2F | R00 | ACF04 | PB-1 | 230 | 2n | MEP |  |  | H |
| PP3BE26009C0 |  | PA-P3 ; 2nd Fix, Inst of Equipment (DB, TR, SG) (Elec RM)_PB-1 | 30d | 2012-05-19 | 2012-06-24 | PP3BE08107C0 | 189.62d | 0d | ELECTRICAL [1192.8 h]; Cost |  |  | CP2ME26024C0 | PP3BE26009C0 | PA | C | P3 | ER | ME | 260 | 09 | PB | N | BILL 2 | B02 | S1 | 2F | R00 | ACF04 | PB-1 | 260 | 2n | MEP |  |  | E |
| PP3BE09501C0 |  | PA-P3 ; Ceiling Grid and Service Tile (Elec RM)_PB-1 | 16d | 2012-06-20 | 2012-07-09 | OGNMU00023S0, OGNMU00037S0, PP3BE23002C0, PP3BE23003C0, PP3BE23004C0, PP3BE23007C0, PP3BE23009C0, PP3BE23010C0, PP3BE26001C0, PP3BE26002C0 | 156.62d | 0d | CEILING GRID FOR GYPSUM [2021.05 h]; CEILING GRID FOR GYPSUM [172.75 m2]; Cost | 323 | 1408 | CP2ME09501C0 | PP3BE09501C0 | PA | C | P3 | ER | CE | 095 | 01 | PB | N | BILL 2 | B02 | S1 | 01 | R00 | ACF06 | PB-1 | 095 |  |  |  |  |  |
| PP3BE26008C0 |  | PA-P3 ; 2nd Fix, Cable Pulling (Elec RM)_PB-1 | 30d | 2012-06-20 | 2012-07-25 | PP3BE26002C0 | 142.62d | 0d | ELECTRICAL [4096.8 h]; Cost |  |  | CP2ME26022C0 | PP3BE26008C0 | PA | C | P3 | ER | ME | 260 | 08 | PB | N | BILL 2 | B02 | S1 | 2F | R00 | ACF07 | PB-1 | 260 | 2n | MEP |  |  |  |
| PP3BE27001C0 |  | PA-P3 ; 1st Fix, Wiring/ Cabling work (Elec RM)_PB-1 | 30d | 2012-06-20 | 2012-07-25 | PP3BE04001C0, PP3BE27002C0 | 142.62d | 0d | ELECTRICAL [76.8 h]; Cost |  |  | CP2ME27012C0 | PP3BE27001C0 | PA | C | P3 | ER | ME | 270 | 01 | PB | N | BILL 2 | B02 | S1 | 1F | R00 | ACF04 | PB-1 | 270 | 1S | MEP | M1F |  |  |
| PP3BE21104C0 |  | PA-P3 ; 2nd Fix, Inst of Sprinkler droppers (Elec RM)_PB-1 | 30d | 2012-07-09 | 2012-08-13 | PP3BE09501C0 | 182.62d | 163.39d | MECHANICAL [3199.2 h]; Cost |  |  | CP2ME21120C0 | PP3BE21104C0 | PA | C | P3 | ER | ME | 211 | 04 | PB | N | BILL 2 | B02 | S1 | 2F | R00 | ACF07 | PB-1 | 211 | 2n | MEP |  |  |  |
| PP3BE21105C0 |  | PA-P3 ; 2nd Fix, Inst of Zone Control Valve (Elec RM)_PB-1 | 30d | 2012-07-09 | 2012-08-13 | PP3BE09501C0 | 182.62d | 163.39d | MECHANICAL [735.6 h]; Cost |  |  | CP2ME21124C0 | PP3BE21105C0 | PA | C | P3 | ER | ME | 211 | 05 | PB | N | BILL 2 | B02 | S1 | 2F | R00 | ACF07 | PB-1 | 211 | 2n | MEP |  |  |  |
| PP3BE27005C0 |  | PA-P3 ; 2nd Fix, Wiring Droppers (Elec RM)_PB-1 | 30d | 2012-07-09 | 2012-08-13 | PP3BE09501C0 | 182.62d | 163.39d | ELECTRICAL [76.8 h]; Cost |  |  | CP2ME27022C0 | PP3BE27005C0 | PA | C | P3 | ER | ME | 270 | 05 | PB | N | BILL 2 | B02 | S1 | 2F | R00 | ACF07 | PB-1 | 270 | 2n | MEP |  |  |  |
| PP3BE27006C0 |  | PA-P3 ; 2nd Fix, Inst of ELV Equipment (Panels) (Elec RM)_PB-1 | 30d | 2012-07-09 | 2012-08-13 | PP3BE09501C0 | 182.62d | 163.39d | ELECTRICAL [183.6 h]; Cost |  |  | CP2ME27020C0 | PP3BE27006C0 | PA | C | P3 | ER | ME | 270 | 06 | PB | N | BILL 2 | B02 | S1 | 2F | R00 | ACF04 | PB-1 | 270 | 2n | MEP |  |  | E |
| PP3BE09203C0 |  | PA-P3 ; Partitions Closing (Elec RM)_PB-1 | 27d | 2012-07-10 | 2012-08-11 | PAFOA09201C1 FF, PP3BE09202C0, PP3BE08102C0 FF, PGLS103331C360, PGLS103331C370, PGLS103331C350, PGLS103331C340, PGLS103331C330, PGLS103391C220, PP2BE09502C0 SS | 148.22d | 5.6d | PARTITIONS [4 m]; PARTITIONS [18 h]; Cost |  | 1540 | CP2ME09205C0 | PP3BE09203C0 | PA | C | P3 | ER | PT | 092 | 03 | PB | N | BILL 2 | B02 | S1 | FF | R00 | ACF06 | PB-1 | 092 |  | GP | P2F |  |  |
| PP3BE09502C0 |  | PA-P3 ; Ceiling closure (Elec RM)_PB-1 | 20d | 2012-07-25 | 2012-08-18 | PP3BE09501C0, PP3BE26007C0, PP3BE26008C0, PP3BE27001C0, PGLS103331C360, PGLS103331C370, PGLS103331C350, PGLS103331C340, PGLS103331C330, PGLS103391C220, PP2BE09502C0 SS | 142.62d | 0d | ASSORTED CEILING FINISH [114.39 h]; CEILING GYPSUM [56.58 h]; ASSORTED CEILING FINISH [186 m2]; CEILING GYPSUM [173 m2]; Cost | 324 | 1409 | CP2ME09503C0 | PP3BE09502C0 | PA | C | P3 | ER | CE | 095 | 02 | PB | N | BILL 2 | B02 | S1 | 02 | R00 | ACF06 | PB-1 | 095 |  |  |  |  |  |
| PP3BE23006C0 |  | PA-P3 ; Final Fix, Inst of Flexible Duct & Plenum boxes (Elec RM)_PB-1 | 18d | 2012-07-28 | 2012-08-18 | PP3BE09501C0, PGLS103331C360, PGLS103331C370, PGLS103331C350, PGLS103331C340, PGLS103331C330, PGLS103391C220, PP3BE09502C0 FF, PP2BE09502C0 SS | 178.62d | 0d | MECHANICAL [33.6 h]; Cost |  |  | CP2ME23032C0 | PP3BE23006C0 | PA | C | P3 | ER | ME | 230 | 06 | PB | N | BILL 2 | B02 | S1 | FF | R00 | ACF07 | PB-1 | 230 | FF | MEP |  |  |  |
| PP3BE26004C0 |  | PA-P3 ; Final Fix, Inst of Ceiling rose (Elec RM)_PB-1 | 18d | 2012-07-28 | 2012-08-18 | PP3BE09501C0, PGLS103331C360, PGLS103331C370, PGLS103331C350, PGLS103331C340, PGLS103331C330, PGLS103391C220, PP3BE23006C0 FF, PP2BE09502C0 SS | 178.62d | 159.39d | ELECTRICAL [25.2 h]; Cost |  |  | CP2ME26032C0 | PP3BE26004C0 | PA | C | P3 | ER | ME | 260 | 04 | PB | N | BILL 2 | B02 | S1 | FF | R00 | ACF07 | PB-1 | 260 | FF | MEP |  |  |  |
| PP3BE09601C0 |  | PA-P3 ; Flooring (Elec RM)_PB-1 | 18d | 2012-08-18 | 2012-09-10 | PP3BE09902C0, PP3BE09903C0, PP3BE23008C0, PGLS103331C360, PGLS103331C370, PGLS103331C350, PGLS103331C340, PGLS103331C330, PGLS103391C220, PP3BE09901C0 FF, PP2BE09502C0 SS, PP3BE09203C0 | 142.62d | 0d | ASSORTED FLOOR FINISH [1312 h]; ASSORTED FLOOR FINISH [726 m2]; Cost | 326 | 1377 | CP2ME09601C0 | PP3BE09601C0 | PA | C | P3 | ER | FF | 096 | 01 | PB | N | BILL 2 | B02 | S1 | 01 | R00 | ACF06 | PB-1 | FF |  |  |  |  |  |
| PP3BE09904C0 |  | PA-P3 ; Ceiling - final Paint (Elec RM)_PB-1 | 6d | 2012-08-18 | 2012-08-27 | PP3BE09903C0, PGLS103331C360, PGLS103331C370, PGLS103331C350, PGLS103331C340, PGLS103331C330, PGLS103391C220, PP3BE09502C0, PP2BE09502C0 SS | 142.62d | 0d | ASSORTED CEILING FINISH [21 h]; Cost |  | 1546 | CP2ME09907C0 | PP3BE09904C0 | PA | C | P3 | ER | PA | 099 | 04 | PB | N | BILL 2 | B02 | S1 | 02 | R00 | ACF06 | PB-1 | 099 |  |  |  |  |  |
| PP3BE21101C0 |  | PA-P3 ; Final Fix, Gaseous Fire Suppression Electrical Room (Elec RM)_PB-1 | 18d | 2012-08-18 | 2012-09-10 | PP3BE09502C0, PGLS103331C360, PGLS103331C370, PGLS103331C350, PGLS103331C340, PGLS103331C330, PGLS103391C220, PP2BE09502C0 SS | 160.62d | 141.39d | MECHANICAL [697.2 h]; Cost |  |  | CP2ME21109C0 | PP3BE21101C0 | PA | C | P3 | ER | ME | 211 | 01 | PB | N | BILL 2 | B02 | S1 | FF | R00 | ACF07 | PB-1 | 211 | FF | MEP |  |  |  |
| PP3BE21102C0 |  | PA-P3 ; Final Fix, Gaseous Fire Suppression Transformer room (Elec RM)_PB-1 | 18d | 2012-08-18 | 2012-09-10 | PP3BE09502C0, PGLS103331C360, PGLS103331C370, PGLS103331C350, PGLS103331C340, PGLS103331C330, PGLS103391C220, PP2BE09502C0 SS | 160.62d | 141.39d | MECHANICAL [697.2 h]; Cost |  |  | CP2ME21111C0 | PP3BE21102C0 | PA | C | P3 | ER | ME | 211 | 02 | PB | N | BILL 2 | B02 | S1 | FF | R00 | ACF07 | PB-1 | 211 | FF | MEP |  |  |  |
| PP3BE21103C0 |  | PA-P3 ; Final Fix, Gaseous Fire Suppression Telecom Room (Elec RM)_PB-1 | 18d | 2012-08-18 | 2012-09-10 | PP3BE09502C0, PGLS103331C360, PGLS103331C370, PGLS103331C350, PGLS103331C340, PGLS103331C330, PGLS103391C220, PP2BE09502C0 SS | 160.62d | 141.39d | MECHANICAL [697.2 h]; Cost |  |  | CP2ME21113C0 | PP3BE21103C0 | PA | C | P3 | ER | ME | 211 | 03 | PB | N | BILL 2 | B02 | S1 | FF | R00 | ACF07 | PB-1 | 211 | FF | MEP |  |  |  |
| PP3BE23005C0 |  | PA-P3 ; Final Fix, Inst of Grilles & Diffusers (Elec RM)_PB-1 | 18d | 2012-08-18 | 2012-09-10 | PP3BE09502C0, PGLS103331C360, PGLS103331C370, PGLS103331C350, PGLS103331C340, PGLS103331C330, PGLS103391C220, PP2BE09502C0 SS | 160.62d | 141.39d | MECHANICAL [754.8 h]; Cost |  |  | CP2ME23030C0 | PP3BE23005C0 | PA | C | P3 | ER | ME | 230 | 05 | PB | N | BILL 2 | B02 | S1 | FF | R00 | ACF07 | PB-1 | 230 | FF | MEP |  |  |  |
| PP3BE26003C0 |  | PA-P3 ; Final Fix, Termination & Gladding of Cables (Elec RM)_PB-1 | 18d | 2012-08-18 | 2012-09-10 | PP3BE09502C0, PGLS103331C360, PGLS103331C370, PGLS103331C350, PGLS103331C340, PGLS103331C330, PGLS103391C220, PP2BE09502C0 SS | 160.62d | 0d | ELECTRICAL [512.4 h]; Cost |  |  | CP2ME26030C0 | PP3BE26003C0 | PA | C | P3 | ER | ME | 260 | 03 | PB | N | BILL 2 | B02 | S1 | FF | R00 | ACF07 | PB-1 | 260 | FF | MEP |  |  |  |
| PP3BE26005C0 |  | PA-P3 ; Final Fix, Inst of Switch/Sockets (Elec RM)_PB-1 | 18d | 2012-08-18 | 2012-09-10 | PP3BE09502C0, PGLS103331C360, PGLS103331C370, PGLS103331C350, PGLS103331C340, PGLS103331C330, PGLS103391C220, PP2BE09502C0 SS | 160.62d | 141.39d | ELECTRICAL [500.4 h]; Cost |  |  | CP2ME26034C0 | PP3BE26005C0 | PA | C | P3 | ER | ME | 260 | 05 | PB | N | BILL 2 | B02 | S1 | FF | R00 | ACF07 | PB-1 | 260 | FF | MEP |  |  |  |
| PP3BE26006C0 |  | PA-P3 ; Final Fix, Inst of Light fittings (Elec RM)_PB-1 | 18d | 2012-08-18 | 2012-09-10 | PP3BE09502C0, PGLS103331C360, PGLS103331C370, PGLS103331C350, PGLS103331C340, PGLS103331C330, PGLS103391C220, PP2BE09502C0 SS | 160.62d | 141.39d | ELECTRICAL [3124.8 h]; Cost |  |  | CP2ME26039C0 | PP3BE26006C0 | PA | C | P3 | ER | ME | 260 | 06 | PB | N | BILL 2 | B02 | S1 | FF | R00 | ACF07 | PB-1 | 260 | FF | MEP |  |  |  |
| PP3BE27003C0 |  | PA-P3 ; Final Fix, BMS connection work to Equipment (Elec RM)_PB-1 | 18d | 2012-08-18 | 2012-09-10 | PP3BE26009C0, PGLS103331C360, PGLS103331C370, PGLS103331C350, PGLS103331C340, PGLS103331C330, PGLS103391C220, PP3BE26003C0 FF, PP2BE09502C0 SS | 160.62d | 141.39d | ELECTRICAL [2335.2 h]; Cost |  |  | CP2ME27032C0 | PP3BE27003C0 | PA | C | P3 | ER | ME | 270 | 03 | PB | N | BILL 2 | B02 | S1 | FF | R00 | ACF07 | PB-1 | 270 | FF | MEP |  |  |  |
| PP3BE27004C0 |  | PA-P3 ; Final Fix, Inst of ELV device (Detector/Speaker) (Elec RM)_PB-1 | 18d | 2012-08-18 | 2012-09-10 | PP3BE09502C0, PGLS103331C360, PGLS103331C370, PGLS103331C350, PGLS103331C340, PGLS103331C330, PGLS103391C220, PP2BE09502C0 SS | 160.62d | 141.39d | ELECTRICAL [140.4 h]; Cost |  |  | CP2ME27030C0 | PP3BE27004C0 | PA | C | P3 | ER | ME | 270 | 04 | PB | N | BILL 2 | B02 | S1 | FF | R00 | ACF07 | PB-1 | 270 | FF | MEP |  |  |  |
| PP3BE08103C0 |  | PA-P3 ; Metal Doors (Elec RM)_PB-1 | 12d | 2012-08-27 | 2012-09-10 | PP3BE08102C0, PGLS103331C360, PGLS103331C370, PGLS103331C350, PGLS103331C340, PGLS103331C330, PGLS103391C220, PP3BE09601C0 FF, PP2BE09502C0 SS | 146.75d | 0d | METAL DOORS [30 h]; METAL DOORS [3 no]; Cost | 317 | 1375 | CP2ME08105C0 | PP3BE08103C0 | PA | C | P3 | ER | DO | 081 | 03 | PB | N | BILL 2 | B02 | S1 | DR | R00 | ACF06 | PB-1 | 081 |  |  |  | 08 |  |
| PP3BE09901C0 |  | PA-P3 ; Wall - final Paint (Elec RM)_PB-1 | 12d | 2012-08-27 | 2012-09-10 | PP3BE09902C0, PGLS103331C360, PGLS103331C370, PGLS103331C350, PGLS103331C340, PGLS103331C330, PGLS103391C220, PP3BE09904C0, PP2BE09502C0 SS | 142.62d | 0d | WALL PAINT [164 h]; WALL PAINT [204 m2]; Cost | 329 | 1379 | CP2ME09903C0 | PP3BE09901C0 | PA | C | P3 | ER | PA | 099 | 01 | PB | N | BILL 2 | B02 | S1 | 02 | R00 | ACF06 | PB-1 | 099 |  |  |  |  |  |
| PP3BE05501C0 |  | PA-P3 ; Handrails & balustrade (Elec RM)_PB-1 | 18d | 2012-09-05 | 2012-09-26 | PP3BE09902C0, PGLS103331C360, PGLS103331C370, PGLS103331C350, PGLS103331C340, PGLS103331C330, PGLS103391C220, PP3BE08701C0 FF, PP2BE09502C0 SS | 146.75d | 127.51d | SECONDARY STEEL [175 h]; Cost |  |  | CP2ME05501C0 | PP3BE05501C0 | PA | C | P3 | ER | SW | 055 | 01 | PB | N | BILL 2 | B02 | S1 | 01 | R00 | ACF03 | PB-1 | a |  |  |  |  |  |
| PP3BE08701C0 |  | PA-P3 ; Ironmongery (Elec RM)_PB-1 | 13.88d | 2012-09-10 | 2012-09-26 | OGNMU00059S0, PP3BE08103C0, PGLS103331C360, PGLS103331C370, PGLS103331C350, PGLS103331C340, PGLS103331C330, PGLS103391C220, PP2BE09502C0 SS | 146.75d | 0d | IRONMONGERY [30 h]; IRONMONGERY [3 no]; Cost | 322 | 6230 | CP2ME08709C0 | PP3BE08701C0 | PA | C | P3 | ER | DO | 087 | 01 | PB | N | BILL 2 | B02 | S1 | IM | R00 | ACF06 | PB-1 | 087 |  |  |  | 08 |  |

| ID | WBS | Activity | Duration | Start | Finish | Predecessors | Total float | Free float | Resources | change id | IDDD | CCAD BUILDING(SET) | CCAD PHASE(SET) | CCAD FLOOR(SET) | CCAD ZONE(SET) | CCAD WORK(SET) | CCAD SECTION(SET) | CCAD SERIAL No.(SET) | CCAD SUB ZONE MEP(SET) | CCAD Carpark code(SET) | CCAD Carpark district code(set) | CCAD CBS(SET) | CCAD BILL(SET) | CCAD HANDOVER(SET) | CCAD TAG(SET) | CCAD REV(SET) | CCADACF (SET) | FSP CODE | CCAD CSA | CCAD SSCF | Change Order # | NEW ACTIVITY ID | Act Selector % | CCAD DIVISION(SET) | CCAD MEQ |
| --- | --- | --- | --- | --- | --- | --- | --- | --- | --- | --- | --- | --- | --- | --- | --- | --- | --- | --- | --- | --- | --- | --- | --- | --- | --- | --- | --- | --- | --- | --- | --- | --- | --- | --- | --- |
| PP3BE22001C0 |  | PA-P3 ; Final Fix, Inst of All drain (Elec RM)_PB-1 | 18d | 2012-09-10 | 2012-10-01 | PP3BE09601C0, PGLS103331C360, PGLS103331C370, PGLS103331C350, PGLS103331C340, PGLS103331C330, PGLS103391C220, PP2BE09502C0 SS | 142.62d | 123.39d | PLUMBING [2156.4 h]; Cost | CP2ME22037C0 | PP3BE22001C0 | PA | C | P3 | ER | ME | 220 | 01 | FF | PB | N | BILL 2 | B02 | S1 | FF | R00 | ACF07 | PB-1 | MEP | 220 |  |  |  |  |  |
|  | BM1 | **MECHANICAL ROOMS (2 NOS.) ; Zone PB-1** |  | 2012-01-30 | 2012-10-29 |  |  |  |  |  |  |  |  |  |  |  |  |  |  |  |  |  |  |  |  |  |  |  |  |  |  |  |  |  |  |
| PP3BM09902C0 |  | PA-P3 ; Wall Prime & 1st coat (Mech RM)_PB-1 | 18d | 2012-01-30 | 2012-02-21 | PGLS103391C100, PGLS103391C110 | 102.62d | 0d | WALL PAINT [1080 h]; WALL PAINT [1348.22 m2]; Cost | C04ME09901C0 | PP3BM09902C0 | PA | C | P3 | M1 | PA | 099 | 02 |  | PB | N | BILL 2 | B02 | S1 | 01 | R00 | ACF06 | PB-1 |  | 099 | 328 | 1469 |  |  |  |
| PP3BM04001C0 |  | PA-P3 ; Block Wall Works (Mech RM)_PB-1 | 30d | 2012-02-21 | 2012-03-27 | PP3BM09902C0 | 120.62d | 0d | BLOCKWORKS [1147 h]; BLOCKWORKS [327.78 m2]; Cost | AP3M104001C0 | PP3BM04001C0 | PA | C | P3 | M1 | BL | 040 | 01 |  | PB | N | BILL 2 | B02 | S1 | BL | R00 | ACF06 | PB-1 |  | 040 |  |  |  |  |  |
| PP3BM09201C0 |  | PA-P3 ; Metal Studs (Mech RM)_PB-1 | 10d | 2012-03-04 | 2012-03-15 | PP3BM04001C0 SS+10d | 255.62d | 0d | PARTITIONS [64 h]; PARTITIONS [8.89 m]; Cost | C04ME09201C0 | PP3BM09201C0 | PA | C | P3 | M1 | PT | 092 | 01 |  | PB | N | BILL 2 | B02 | S1 | 1F | R00 | ACF06 | PB-1 | GP | 092 |  |  | PMS |  |  |
| PP3BM08102C0 |  | PA-P3 ; Metal Door Frames (Mech RM)_PB-1 | 3.62d | 2012-03-15 | 2012-03-19 | PP3BM09201C0, GNHE08101C0 | 284.88d | 78.38d | METAL DOORS [103 h]; Cost | C04ME08101C0 | PP3BM08102C0 | PA | C | P3 | M1 | DO | 081 | 02 |  | PB | N | BILL 2 | B02 | S1 | DF | R00 | ACF06 | PB-1 |  | 081 | 316 | 1465 |  | 08 |  |
| PP3BM09202C0 |  | PA-P3 ; Partitions 1st face (Mech RM)_PB-1 | 12d | 2012-03-18 | 2012-04-01 | PP3BM09201C0 SS+12d | 255.62d | 85.4d | PARTITIONS [8.89 m]; PARTITIONS [47 h]; Cost | C04ME09203C0 | PP3BM09202C0 | PA | C | P3 | M1 | PT | 092 | 02 |  | PB | N | BILL 2 | B02 | S1 | 2F | R00 | ACF06 | PB-1 | GP | 092 | 314 | 1463 | P1F |  |  |
| PP3BM23003C0 |  | PA-P3 ; 1st Fix, Inst. of Supports for MEP (Mech RM)_PB-1 | 12d | 2012-03-27 | 2012-04-10 | PP3BM04001C0 | 120.62d | 0d | MECHANICAL [139.2 h]; Cost | C04ME23001C0 | PP3BM23003C0 | PA | C | P3 | M1 | ME | 230 | 03 | 1S | PB | N | BILL 2 | B02 | S1 | 1F | R00 | ACF04 | PB-1 | MEP | 230 |  |  | M1F |  |  |
| PP3BM21102C0 |  | PA-P3 ; 1st Fix, Inst of Sprinkler main pipe (Mech RM)_PB-1 | 30d | 2012-04-10 | 2012-05-15 | PP3BM23003C0, PP3BM04001C0 | 120.62d | 0d | MECHANICAL [2182.8 h]; Cost | C04ME21111C0 | PP3BM21102C0 | PA | C | P3 | M1 | ME | 211 | 02 | 1S | PB | N | BILL 2 | B02 | S1 | 1F | R00 | ACF04 | PB-1 | MEP | 211 |  |  | M1F |  |  |
| PP3BM22001C0 |  | PA-P3 ; 1st Fix, Inst of Drainage pipe (Mech RM)_PB-1 | 30d | 2012-04-10 | 2012-05-15 | PP3BM23003C0, PP3BM04001C0 | 144.62d | 0d | PLUMBING [478.8 h]; Cost | C04ME22011C0 | PP3BM22001C0 | PA | C | P3 | M1 | ME | 220 | 01 | 1S | PB | N | BILL 2 | B02 | S1 | 1F | R00 | ACF04 | PB-1 | MEP | 220 |  |  | M1F |  |  |
| PP3BM22003C0 |  | PA-P3 ; 1st Fix, Inst of Water supply pipe (Mech RM)_PB-1 | 30d | 2012-04-10 | 2012-05-15 | PP3BM23003C0, PP3BM04001C0 | 144.62d | 0d | PLUMBING [1351.2 h]; Cost | C04ME22006C0 | PP3BM22003C0 | PA | C | P3 | M1 | ME | 220 | 03 | 1S | PB | N | BILL 2 | B02 | S1 | 1F | R00 | ACF04 | PB-1 | MEP | 220 |  |  | M1F |  |  |
| PP3BM23001C0 |  | PA-P3 ; 1st Fix, Inst of CHW pipe (Mech RM)_PB-1 | 30d | 2012-04-10 | 2012-05-15 | PP3BM21102C0 SS, PP3BM23003C0, PP3BM04001C0 | 144.62d | 0d | MECHANICAL [688.8 h]; Cost | C04ME23019C0 | PP3BM23001C0 | PA | C | P3 | M1 | ME | 230 | 01 | 1S | PB | N | BILL 2 | B02 | S1 | 1F | R00 | ACF04 | PB-1 | MEP | 230 |  |  | M1F |  |  |
| PP3BM23004C0 |  | PA-P3 ; 2nd Fix, Inst of Equipment (AHU) (Mech RM)_PB-1 | 30d | 2012-04-10 | 2012-05-15 | PP3BM04001C0, PP3BM22001C0 FF, PP3BM22003C0 FF | 144.62d | 0d | MECHANICAL [117.6 h]; Cost | C04ME23013C0 | PP3BM23004C0 | PA | C | P3 | M1 | ME | 230 | 04 | 2n | PB | N | BILL 2 | B02 | S1 | 2F | R00 | ACF04 | PB-1 | MEP | 230 |  |  |  |  | H |
| PP3BM21101C0 |  | PA-P3 ; 1st Fix, Inst of Sprinkler branch pipe (Mech RM)_PB-1 | 30d | 2012-05-15 | 2012-06-20 | PP3BM21102C0 SS, PP3BM04001C0, PP3BM21102C0 | 180.62d | 0d | MECHANICAL [1795.2 h]; Cost | C04ME21119C0 | PP3BM21101C0 | PA | C | P3 | M1 | ME | 211 | 01 | 1S | PB | N | BILL 2 | B02 | S1 | 1F | R00 | ACF04 | PB-1 | MEP | 211 |  |  | M1F |  |  |
| PP3BM21105C0 |  | PA-P3 ; 2nd Fix, Inst of Zone Control Valve (Mech RM)_PB-1 | 30d | 2012-05-15 | 2012-06-20 | PP3BM23001C0, PP3BM23004C0 | 144.62d | 0d | MECHANICAL [163.2 h]; Cost | C04ME21117C0 | PP3BM21105C0 | PA | C | P3 | M1 | ME | 211 | 05 | 2n | PB | N | BILL 2 | B02 | S1 | 2F | R00 | ACF07 | PB-1 | MEP | 211 |  |  |  |  |  |
| PP3BM23002C0 |  | PA-P3 ; 1st Fix, Inst of Ducting (Mech RM)_PB-1 | 30d | 2012-05-15 | 2012-06-20 | PP3BM23003C0, PP3BM04001C0, PP3BM21102C0 | 120.62d | 0d | MECHANICAL [877.2 h]; Cost | C04ME23005C0 | PP3BM23002C0 | PA | C | P3 | M1 | ME | 230 | 02 | 1S | PB | N | BILL 2 | B02 | S1 | 1F | R00 | ACF04 | PB-1 | MEP | 230 |  |  | M1F |  |  |
| PP3BM23005C0 |  | PA-P3 ; 2nd Fix, Inst of Equipment (FCU,FAN,PUMP) (Mech RM)_PB-1 | 30d | 2012-05-15 | 2012-06-20 | PP3BM23004C0 | 174.62d | 0d | MECHANICAL [499.2 h]; Cost | C04ME23011C0 | PP3BM23005C0 | PA | C | P3 | M1 | ME | 230 | 05 | 2n | PB | N | BILL 2 | B02 | S1 | 2F | R00 | ACF04 | PB-1 | MEP | 230 |  |  |  |  | H |
| PP3BM26004C0 |  | PA-P3 ; 2nd Fix, Inst of Equipment (DB, TR, SG) (Mech RM)_PB-1 | 30d | 2012-05-15 | 2012-06-20 | PP3BM23004C0 | 210.62d | 90d | ELECTRICAL [265.2 h]; Cost | C04ME26009C0 | PP3BM26004C0 | PA | C | P3 | M1 | ME | 260 | 04 | 2n | PB | N | BILL 2 | B02 | S1 | 2F | R00 | ACF04 | PB-1 | MEP | 260 |  |  |  |  | E |
| PP3BM27003C0 |  | PA-P3 ; 2nd Fix, Inst of ELV Equipment (Panels) (Mech RM)_PB-1 | 30d | 2012-05-15 | 2012-06-20 | PP3BM23004C0 | 210.62d | 30d | ELECTRICAL [40.8 h]; Cost | C04ME27020C0 | PP3BM27003C0 | PA | C | P3 | M1 | ME | 270 | 03 | 2n | PB | N | BILL 2 | B02 | S1 | 2F | R00 | ACF04 | PB-1 | MEP | 270 |  |  |  |  | E |
| PP3BM08103C0 |  | PA-P3 ; Metal Doors (Mech RM)_PB-1 | 4.12d | 2012-06-20 | 2012-06-25 | PP3BM08102C0, PGLS103331C360, PGLS103331C370, PGLS103331C350, PGLS103331C340, PGLS103331C330, PGLS103391C220, PP3BM23005C0 | 206.51d | 13.28d | METAL DOORS [91 h]; METAL DOORS [9.11 no]; Cost | C04ME08105C0 | PP3BM08103C0 | PA | C | P3 | M1 | DO | 081 | 03 |  | PB | N | BILL 2 | B02 | S1 | DR | R00 | ACF06 | PB-1 |  | 081 | 317 | 1466 |  | 08 |  |
| PP3BM21104C0 |  | PA-P3 ; 2nd Fix, Inst of Sprinkler droppers (Mech RM)_PB-1 | 30d | 2012-06-20 | 2012-07-25 | PP3BM21101C0 | 180.62d | 36d | MECHANICAL [710.4 h]; Cost | C04ME21115C0 | PP3BM21104C0 | PA | C | P3 | M1 | ME | 211 | 04 | 2n | PB | N | BILL 2 | B02 | S1 | 2F | R00 | ACF07 | PB-1 | MEP | 211 |  |  |  |  |  |
| PP3BM23006C0 |  | PA-P3 ; 2nd Fix, Inst of VAV'S CHW connection (Mech RM)_PB-1 | 30d | 2012-06-20 | 2012-07-25 | PP3BM23005C0 FF, PP3BM21105C0 | 144.62d | 0d | MECHANICAL [10.8 h]; Cost | C04ME23009C0 | PP3BM23006C0 | PA | C | P3 | M1 | ME | 230 | 06 | 2n | PB | N | BILL 2 | B02 | S1 | 2F | R00 | ACF07 | PB-1 | MEP | 230 |  |  |  |  |  |
| PP3BM23007C0 |  | PA-P3 ; 2nd Fix, Inst of VCD's/FD's (Mech RM)_PB-1 | 30d | 2012-06-20 | 2012-07-25 | PP3BM23002C0 | 144.62d | 0d | MECHANICAL [259.2 h]; Cost | C04ME23015C0 | PP3BM23007C0 | PA | C | P3 | M1 | ME | 230 | 07 | 2n | PB | N | BILL 2 | B02 | S1 | 2F | R00 | ACF07 | PB-1 | MEP | 230 |  |  |  |  |  |
| PP3BM23008C0 |  | PA-P3 ; 2nd Fix, Insulation of CHW pipe & Duct (Mech RM)_PB-1 | 30d | 2012-06-20 | 2012-07-25 | PP3BM23001C0, PP3BM23002C0 | 144.62d | 0d | MECHANICAL [823.2 h]; Cost | C04ME23017C0 | PP3BM23008C0 | PA | C | P3 | M1 | ME | 230 | 08 | 2n | PB | N | BILL 2 | B02 | S1 | 2F | R00 | ACF07 | PB-1 | MEP | 230 |  |  |  |  |  |
| PP3BM26001C0 |  | PA-P3 ; 1st Fix, Inst of Cable Tray (Mech RM)_PB-1 | 30d | 2012-06-20 | 2012-07-25 | PP3BM04001C0, PP3BM23002C0 | 120.62d | 0d | ELECTRICAL [14.4 h]; Cost | C04ME26011C0 | PP3BM26001C0 | PA | C | P3 | M1 | ME | 260 | 01 | 1S | PB | N | BILL 2 | B02 | S1 | 1F | R00 | ACF04 | PB-1 | MEP | 260 |  |  | M1F |  |  |
| PP3BM26002C0 |  | PA-P3 ; 1st Fix, Inst of Trunking/Conduiting (Mech RM)_PB-1 | 30d | 2012-06-20 | 2012-07-25 | PP3BM23003C0, PP3BM04001C0, PP3BM23002C0 | 150.62d | 30d | ELECTRICAL [43.2 h]; Cost | C04ME26001C0 | PP3BM26002C0 | PA | C | P3 | M1 | ME | 260 | 02 | 1S | PB | N | BILL 2 | B02 | S1 | 1F | R00 | ACF04 | PB-1 | MEP | 260 |  |  | M1F |  |  |
| PP3BM27001C0 |  | PA-P3 ; 1st Fix, Inst of Trunking for ELV system (Mech RM)_PB-1 | 30d | 2012-06-20 | 2012-07-25 | PP3BM04001C0, PP3BM23002C0 | 150.62d | 30d | ELECTRICAL [118.8 h]; Cost | C04ME27010C0 | PP3BM27001C0 | PA | C | P3 | M1 | ME | 270 | 01 | 1S | PB | N | BILL 2 | B02 | S1 | 1F | R00 | ACF04 | PB-1 | MEP | 270 |  |  | M1F |  |  |
| PP3BM08101C0 |  | PA-P3 ; Al / Glass doors (Mech RM)_PB-1 | 5d | 2012-07-10 | 2012-07-16 | OGNMU00059S0, OGNMU00065S0, PP3BM08103C0, PGLS103331C360, PGLS103331C370, PGLS103331C350, PGLS103331C340, PGLS103331C330, PGLS103391C220, PP2BE09502C0 SS | 200.22d | 0d | ASSORTED DOORS [144 h]; ASSORTED DOORS [14.44 no]; Cost | C04ME08109C0 | PP3BM08101C0 | PA | C | P3 | M1 | DO | 081 | 01 |  | PB | N | BILL 2 | B02 | S1 | 03 | R00 | ACF06 | PB-1 |  | 081 |  |  |  |  |  |
| PP3BM09203C0 |  | PA-P3 ; Partitions Closing (Mech RM)_PB-1 | 15d | 2012-07-10 | 2012-07-28 | PAFOA09201C1 FF, PP3BM09202C0, PP3BM22001C0, PP3BM22003C0, PGLS103331C360, PGLS103331C370, PGLS103331C350, PGLS103331C340, PGLS103331C330, PGLS103391C220, PP3BM23005C0, PP2BE09502C0 SS | 170.22d | 0d | PARTITIONS [8.89 m]; PARTITIONS [60 h]; Cost | C04ME09205C0 | PP3BM09203C0 | PA | C | P3 | M1 | PT | 092 | 03 |  | PB | N | BILL 2 | B02 | S1 | FF | R00 | ACF06 | PB-1 | GP | 092 | 315 | 1464 | P2F |  |  |
| PP3BM08701C0 |  | PA-P3 ; Ironmongery (Mech RM)_PB-1 | 6d | 2012-07-16 | 2012-07-23 | PP3BM08101C0, PP3BM08103C0, PGLS103331C360, PGLS103331C370, PGLS103331C350, PGLS103331C340, PGLS103331C330, PGLS103391C220, PP2BE09502C0 SS | 200.22d | 180.99d | IRONMONGERY [93 h]; IRONMONGERY [9.33 no]; Cost | C04ME08709C0 | PP3BM08701C0 | PA | C | P3 | M1 | DO | 087 | 01 |  | PB | N | BILL 2 | B02 | S1 | IM | R00 | ACF06 | PB-1 |  | 087 | 322 | 1467 |  | 08 |  |
| PP3BM09901C0 |  | PA-P3 ; Wall - final Paint (Mech RM)_PB-1 | 7d | 2012-07-25 | 2012-08-02 | PP3BM09902C0, PGLS103331C360, PGLS103331C370, PGLS103331C350, PGLS103331C340, PGLS103331C330, PGLS103391C220, PP3BM23006C0, PP2BE09502C0 SS | 191.62d | 172.39d | WALL PAINT [582 h]; WALL PAINT [726 m2]; Cost | C04ME09903C0 | PP3BM09901C0 | PA | C | P3 | M1 | PA | 099 | 01 |  | PB | N | BILL 2 | B02 | S1 | 02 | R00 | ACF06 | PB-1 |  | 099 | 329 | 1470 |  |  |  |
| PP3BM23009C0 |  | PA-P3 ; Final Fix, Inst of Flexible Duct & Plenum boxes (Mech RM)_PB-1 | 18d | 2012-07-25 | 2012-08-15 | PP3BM23007C0, PP3BM23008C0, PGLS103331C360, PGLS103331C370, PGLS103331C350, PGLS103331C340, PGLS103331C330, PGLS103391C220, PP3BM23006C0, PP2BE09502C0 SS | 144.62d | 0d | MECHANICAL [7.2 h]; Cost | C04ME23023C0 | PP3BM23009C0 | PA | C | P3 | M1 | ME | 230 | 09 | FF | PB | N | BILL 2 | B02 | S1 | FF | R00 | ACF07 | PB-1 | MEP | 230 |  |  |  |  |  |
| PP3BM26003C0 |  | PA-P3 ; 2nd Fix, Cable Pulling (Mech RM)_PB-1 | 30d | 2012-07-25 | 2012-09-01 | PP3BM26001C0 | 120.62d | 0d | ELECTRICAL [910.8 h]; Cost | C04ME26007C0 | PP3BM26003C0 | PA | C | P3 | M1 | ME | 260 | 03 | 2n | PB | N | BILL 2 | B02 | S1 | 2F | R00 | ACF07 | PB-1 | MEP | 260 |  |  |  |  |  |
| PP3BM27002C0 |  | PA-P3 ; 1st Fix, Wiring/ Cabling work (Mech RM)_PB-1 | 30d | 2012-07-25 | 2012-09-01 | PP3BM26001C0 SS, PP3BM26002C0 SS, PP3BM27001C0 SS, PP3BM04001C0, PP3BM26001C0 | 120.62d | 0d | ELECTRICAL [16.8 h]; Cost | C04ME27001C0 | PP3BM27002C0 | PA | C | P3 | M1 | ME | 270 | 02 | 1S | PB | N | BILL 2 | B02 | S1 | 1F | R00 | ACF04 | PB-1 | MEP | 270 |  |  | M1F |  |  |
| PP3BM27005C0 |  | PA-P3 ; Final Fix, Inst of ELV device (Detector/Speaker) (Mech RM)_PB-1 | 18d | 2012-07-25 | 2012-08-15 | PP3BM09902C0, PP3BM23006C0, PP3BM27003C0, PGLS103331C360, PGLS103331C370, PGLS103331C350, PGLS103331C340, PGLS103331C330, PGLS103391C220, PP2BE09502C0 SS | 180.62d | 161.39d | ELECTRICAL [16.8 h]; Cost | C04ME27030C0 | PP3BM27005C0 | PA | C | P3 | M1 | ME | 270 | 05 | FF | PB | N | BILL 2 | B02 | S1 | FF | R00 | ACF07 | PB-1 | MEP | 270 |  |  |  |  |  |
| PP3BM09601C0 |  | PA-P3 ; Floor Finishes (Mech RM)_PB-1 | 8d | 2012-07-28 | 2012-08-06 | PP3BM09203C0, PGLS103331C360, PGLS103331C370, PGLS103331C350, PGLS103331C340, PGLS103331C330, PGLS103391C220, PP3BM08103C0 FF, PP2BE09502C0 SS | 170.22d | 0d | ASSORTED FLOOR FINISH [4648 h]; ASSORTED FLOOR FINISH [2580.67 m2]; Cost | C04ME09601C0 | PP3BM09601C0 | PA | C | P3 | M1 | FF | 096 | 01 |  | PB | N | BILL 2 | B02 | S1 | 01 | R00 | ACF06 | PB-1 |  | FF | 326 | 1501 |  |  |  |
| PP3BM21106C0 |  | PA-P3 ; Final Fix, Inst of Fire Extinguishers/FHC (Mech RM)_PB-1 | 18d | 2012-07-28 | 2012-08-18 | PP3BM09203C0, PGLS103331C360, PGLS103331C370, PGLS103331C350, PGLS103331C340, PGLS103331C330, PGLS103391C220, PP2BE09502C0 SS | 178.22d | 158.99d | MECHANICAL [447.6 h]; Cost | C04ME21123C0 | PP3BM21106C0 | PA | C | P3 | M1 | ME | 211 | 06 | FF | PB | N | BILL 2 | B02 | S1 | FF | R00 | ACF07 | PB-1 | MEP | 211 |  |  |  |  |  |
| PP3BM26006C0 |  | PA-P3 ; Final Fix, Inst of Ceiling rose (Mech RM)_PB-1 | 18d | 2012-07-28 | 2012-08-18 | PP3BM09203C0, PGLS103331C360, PGLS103331C370, PGLS103331C350, PGLS103331C340, PGLS103331C330, PGLS103391C220, PP2BE09502C0 SS | 178.22d | 158.99d | ELECTRICAL [6 h]; Cost | C04ME26015C0 | PP3BM26006C0 | PA | C | P3 | M1 | ME | 260 | 06 | FF | PB | N | BILL 2 | B02 | S1 | FF | R00 | ACF07 | PB-1 | MEP | 260 |  |  |  |  |  |
| PP3BM22004C0 |  | PA-P3 ; Final Fix, Inst of All drain (Mech RM)_PB-1 | 18d | 2012-08-06 | 2012-08-29 | PP3BM09601C0, PGLS103331C360, PGLS103331C370, PGLS103331C350, PGLS103331C340, PGLS103331C330, PGLS103391C220, PP2BE09502C0 SS | 170.22d | 150.99d | PLUMBING [478.8 h]; Cost | C04ME22003C0 | PP3BM22004C0 | PA | C | P3 | M1 | ME | 220 | 04 | FF | PB | N | BILL 2 | B02 | S1 | FF | R00 | ACF07 | PB-1 | MEP | 220 |  |  |  |  |  |
| PP3BM23010C0 |  | PA-P3 ; Final Fix, Inst of Grilles & Diffusers (Mech RM)_PB-1 | 18d | 2012-08-15 | 2012-09-08 | PP3BM23009C0, PGLS103331C360, PGLS103331C370, PGLS103331C350, PGLS103331C340, PGLS103331C330, PGLS103391C220, PP2BE09502C0 SS | 144.62d | 0d | MECHANICAL [110.4 h]; Cost | C04ME23021C0 | PP3BM23010C0 | PA | C | P3 | M1 | ME | 230 | 10 | FF | PB | N | BILL 2 | B02 | S1 | FF | R00 | ACF07 | PB-1 | MEP | 230 |  |  |  |  |  |
| PP3BM26005C0 |  | PA-P3 ; 2nd Fix, Wiring for Power/Lighting/Emergency (Mech RM)_PB-1 | 30d | 2012-09-01 | 2012-10-06 | PP3BM26001C0, PP3BM26002C0, PP3BM26003C0, PP3BM27001C0, PP3BM27002C0 | 120.62d | 0d | ELECTRICAL [16.8 h]; Cost | C04ME26005C0 | PP3BM26005C0 | PA | C | P3 | M1 | ME | 260 | 05 | 2n | PB | N | BILL 2 | B02 | S1 | 2F | R00 | ACF07 | PB-1 | MEP | 260 |  |  |  |  |  |
| PP3BM21107C0 |  | PA-P3 ; Final Fix, Inst of Sprinklers head (Mech RM)_PB-1 | 18d | 2012-09-08 | 2012-09-29 | PP3BM21104C0, PGLS103331C360, PGLS103331C370, PGLS103331C350, PGLS103331C340, PGLS103331C330, PGLS103391C220, PP3BM23010C0, PP2BE09502C0 SS | 144.62d | 125.39d | MECHANICAL [310.8 h]; Cost | C04ME21121C0 | PP3BM21107C0 | PA | C | P3 | M1 | ME | 211 | 07 | FF | PB | N | BILL 2 | B02 | S1 | FF | R00 | ACF07 | PB-1 | MEP | 211 |  |  |  |  |  |
| PP3BM26007C0 |  | PA-P3 ; Final Fix, Inst of Light fittings (Mech RM)_PB-1 | 18d | 2012-10-06 | 2012-10-29 | PP3BM09902C0, PGLS103331C360, PGLS103331C370, PGLS103331C350, PGLS103331C340, PGLS103331C330, PGLS103391C220, PP3BM26005C0, PP2BE09502C0 SS | 120.62d | 101.39d | ELECTRICAL [694.8 h]; Cost | C04ME26019C0 | PP3BM26007C0 | PA | C | P3 | M1 | ME | 260 | 07 | FF | PB | N | BILL 2 | B02 | S1 | FF | R00 | ACF07 | PB-1 | MEP | 260 |  |  |  |  |  |
| PP3BM26008C0 |  | PA-P3 ; Final Fix, Inst of Switch/Sockets (Mech RM)_PB-1 | 18d | 2012-10-06 | 2012-10-29 | PP3BM09902C0, PGLS103331C360, PGLS103331C370, PGLS103331C350, PGLS103331C340, PGLS103331C330, PGLS103391C220, PP3BM26005C0, PP2BE09502C0 SS | 120.62d | 101.39d | ELECTRICAL [27.6 h]; Cost | C04ME26017C0 | PP3BM26008C0 | PA | C | P3 | M1 | ME | 260 | 08 | FF | PB | N | BILL 2 | B02 | S1 | FF | R00 | ACF07 | PB-1 | MEP | 260 |  |  |  |  |  |
| PP3BM26009C0 |  | PA-P3 ; Final Fix, Termination & Gladding of Cables (Mech RM)_PB-1 | 18d | 2012-10-06 | 2012-10-29 | PP3BM09203C0, PP3BM26005C0, PGLS103331C360, PGLS103331C370, PGLS103331C350, PGLS103331C340, PGLS103331C330, PGLS103391C220, PP2BE09502C0 SS | 120.62d | 0d | ELECTRICAL [114 h]; Cost | C04ME26013C0 | PP3BM26009C0 | PA | C | P3 | M1 | ME | 260 | 09 | FF | PB | N | BILL 2 | B02 | S1 | FF | R00 | ACF07 | PB-1 | MEP | 260 |  |  |  |  |  |
| PP3BM27004C0 |  | PA-P3 ; Final Fix, BMS connection work to Equipment (Mech RM)_PB-1 | 18d | 2012-10-06 | 2012-10-29 | PP3BM21105C0, PP3BM23004C0, PP3BM23005C0, PP3BM23007C0, PP3BM26004C0, PP3BM27002C0, PP3BM27003C0, PP3BM26009C0 FF, PGLS103331C360, PGLS103331C370, PGLS103331C350, PGLS103331C340, PGLS103331C330, PGLS103391C220, PP2BE09502C0 SS | 120.62d | 101.39d | ELECTRICAL [549.6 h]; Cost | C04ME27003C0 | PP3BM27004C0 | PA | C | P3 | M1 | ME | 270 | 04 | FF | PB | N | BILL 2 | B02 | S1 | FF | R00 | ACF07 | PB-1 | MEP | 270 |  |  |  |  |  |

| ID | WBS | Activity | Duration | Start | Finish | Predecessors | Total float | Free float | Resources | Change Order # | NEW ACTIVITY ID | change id | IDDD | CCAD BUILDING(SET) | CCAD PHASE(SET) | CCAD FLOOR(SET) | CCAD ZONE(SET) | CCAD WORK(SET) | CCAD SECTION(SET) | CCAD SERIAL No.(SET) | CCAD Carpark code(SET) | CCAD Carpark district code(set) | CCAD CBS(SET) | CCAD BILL(SET) | CCAD HANDOVER(SET) | CCAD TAG(SET) | CCAD REV(SET) | CCADACF (SET) | FSP CODE | CCAD SSCF | CCAD CSA | Act Selector % | CCAD DIVISION(SET) | CCAD SUB ZONE MEP(SET) | CCAD MEQ |
| --- | --- | --- | --- | --- | --- | --- | --- | --- | --- | --- | --- | --- | --- | --- | --- | --- | --- | --- | --- | --- | --- | --- | --- | --- | --- | --- | --- | --- | --- | --- | --- | --- | --- | --- | --- |
|  | BM3 | **MECHANICAL ROOMS (7 NOS.) ; Zone PB-3** |  | 2012-01-19 | 2012-11-17 |  |  |  |  |  |  |  |  |  |  |  |  |  |  |  |  |  |  |  |  |  |  |  |  |  |  |  |  |  |  |
| PP3BM09902C10 |  | PA-P3 ; Wall Prime & 1st coat (Mech RM)_PB-3 | 18d | 2012-01-19 | 2012-02-11 | PGLS103391C180, PGLS103391C200 | 23.88d | 0d | WALL PAINT [3781 h]; WALL PAINT [4718.78 m2]; Cost | 328 | 1469 | C04ME09901C0 | PP3BM09902C0 | PA | C | P3 | M1 | PA | 099 | 02 | PB | N | BILL 2 | B02 | S1 | 01 | R00 | ACF06 | PB-3 | 099 |  |  |  |  |  |
| PP3BM04001C10 |  | PA-P3 ; Block Wall Works (Mech RM)_PB-3 | 30d | 2012-02-11 | 2012-03-17 | PP3BM09902C10 | 23.88d | 0d | BLOCKWORKS [4016 h]; BLOCKWORKS [1147.22 m2]; Cost |  |  | AP3M104001C0 | PP3BM04001C0 | PA | C | P3 | M1 | BL | 040 | 01 | PB | N | BILL 2 | B02 | S1 | BL | R00 | ACF06 | PB-3 | 040 |  |  |  |  |  |
| PP3BM09201C10 |  | PA-P3 ; Metal Studs (Mech RM)_PB-3 | 6d | 2012-02-22 | 2012-02-29 | PP3BM04001C10 SS+10d | 151.12d | 0d | PARTITIONS [225 h]; PARTITIONS [31.11 m]; Cost |  |  | C04ME09201C0 | PP3BM09201C0 | PA | C | P3 | M1 | PT | 092 | 01 | PB | N | BILL 2 | B02 | S1 | 1F | R00 | ACF06 | PB-3 | 092 | GP | PMS |  |  |  |
| PP3BM08102C10 |  | PA-P3 ; Metal Door Frames (Mech RM)_PB-3 | 13.75d | 2012-02-29 | 2012-03-15 | PP3BM09201C10, GNHE08101C0 | 174.12d | 150.25d | METAL DOORS [362 h]; Cost | 316 | 1465 | C04ME08101C0 | PP3BM08102C0 | PA | C | P3 | M1 | DO | 081 | 02 | PB | N | BILL 2 | B02 | S1 | DF | R00 | ACF06 | PB-3 | 081 |  |  | 08 |  |  |
| PP3BM09202C10 |  | PA-P3 ; Partitions 1st face (Mech RM)_PB-3 | 12.75d | 2012-03-07 | 2012-03-21 | PP3BM09201C10 SS+12d | 151.12d | 127.25d | PARTITIONS [31.11 m]; PARTITIONS [163 h]; Cost | 314 | 1463 | C04ME09203C0 | PP3BM09202C0 | PA | C | P3 | M1 | PT | 092 | 02 | PB | N | BILL 2 | B02 | S1 | 2F | R00 | ACF06 | PB-3 | 092 | GP | P1F |  |  |  |
| PP3BM23003C10 |  | PA-P3 ; 1st Fix, Inst. of Supports for MEP (Mech RM)_PB-3 | 12d | 2012-03-17 | 2012-03-31 | PP3BM04001C10 | 23.88d | 0d | MECHANICAL [486 h]; Cost |  |  | C04ME23001C0 | PP3BM23003C0 | PA | C | P3 | M1 | ME | 230 | 03 | PB | N | BILL 2 | B02 | S1 | 1F | R00 | ACF04 | PB-3 | 230 | MEP | M1F |  | 1S |  |
| PP3BM21102C10 |  | PA-P3 ; 1st Fix, Inst of Sprinkler main pipe (Mech RM)_PB-3 | 24d | 2012-03-31 | 2012-04-28 | PP3BM23003C10, PP3BM04001C10 | 23.88d | 0d | MECHANICAL [7640.4 h]; Cost |  |  | C04ME21111C0 | PP3BM21102C0 | PA | C | P3 | M1 | ME | 211 | 02 | PB | N | BILL 2 | B02 | S1 | 1F | R00 | ACF04 | PB-3 | 211 | MEP | M1F |  | 1S |  |
| PP3BM23001C10 |  | PA-P3 ; 1st Fix, Inst of CHW pipe (Mech RM)_PB-3 | 24d | 2012-03-31 | 2012-04-28 | PP3BM21102C10 SS, PP3BM23003C10, PP3BM04001C10 | 125.88d | 24d | MECHANICAL [2408.4 h]; Cost |  |  | C04ME23019C0 | PP3BM23001C0 | PA | C | P3 | M1 | ME | 230 | 01 | PB | N | BILL 2 | B02 | S1 | 1F | R00 | ACF04 | PB-3 | 230 | MEP | M1F |  | 1S |  |
| PP3BM21101C10 |  | PA-P3 ; 1st Fix, Inst of Sprinkler branch pipe (Mech RM)_PB-3 | 24d | 2012-04-28 | 2012-05-26 | PP3BM21102C10, PP3BM04001C10 | 119.88d | 0d | MECHANICAL [6280.8 h]; Cost |  |  | C04ME21119C0 | PP3BM21101C0 | PA | C | P3 | M1 | ME | 211 | 01 | PB | N | BILL 2 | B02 | S1 | 1F | R00 | ACF04 | PB-3 | 211 | MEP | M1F |  | 1S |  |
| PP3BM23002C10 |  | PA-P3 ; 1st Fix, Inst of Ducting (Mech RM)_PB-3 | 24d | 2012-04-28 | 2012-05-26 | PP3BM23003C10, PP3BM04001C10, PP3BM21102C10 | 23.88d | 0d | MECHANICAL [3070.8 h]; Cost |  |  | C04ME23005C0 | PP3BM23002C0 | PA | C | P3 | M1 | ME | 230 | 02 | PB | N | BILL 2 | B02 | S1 | 1F | R00 | ACF04 | PB-3 | 230 | MEP | M1F |  | 1S |  |
| PP3BM23004C10 |  | PA-P3 ; 2nd Fix, Inst of Equipment (AHU) (Mech RM)_PB-3 | 30d | 2012-05-19 | 2012-06-24 | PP3BM04001C10, PP3BM22001C10 FF, PP3BM22003C10 FF | 41.88d | 0d | MECHANICAL [410.4 h]; Cost |  |  | C04ME23013C0 | PP3BM23004C0 | PA | C | P3 | M1 | ME | 230 | 04 | PB | N | BILL 2 | B02 | S1 | 2F | R00 | ACF04 | PB-3 | 230 | MEP |  |  | 2n | H |
| PP3BM21104C10 |  | PA-P3 ; 2nd Fix, Inst of Sprinkler droppers (Mech RM)_PB-3 | 30d | 2012-05-26 | 2012-07-01 | PP3BM21101C10 | 119.88d | 24d | MECHANICAL [2488.8 h]; Cost |  |  | C04ME21115C0 | PP3BM21104C0 | PA | C | P3 | M1 | ME | 211 | 04 | PB | N | BILL 2 | B02 | S1 | 2F | R00 | ACF07 | PB-3 | 211 | MEP |  |  | 2n |  |
| PP3BM22001C10 |  | PA-P3 ; 1st Fix, Inst of Drainage pipe (Mech RM)_PB-3 | 24d | 2012-05-26 | 2012-06-24 | PP3BM23003C10, PP3BM26002C10 SS, PP3BM04001C10 | 41.88d | 0d | PLUMBING [1677.6 h]; Cost |  |  | C04ME22011C0 | PP3BM22001C0 | PA | C | P3 | M1 | ME | 220 | 01 | PB | N | BILL 2 | B02 | S1 | 1F | R00 | ACF04 | PB-3 | 220 | MEP | M1F |  | 1S |  |
| PP3BM22003C10 |  | PA-P3 ; 1st Fix, Inst of Water supply pipe (Mech RM)_PB-3 | 24d | 2012-05-26 | 2012-06-24 | PP3BM22001C10 SS, PP3BM23003C10, PP3BM04001C10 | 41.88d | 0d | PLUMBING [4731.6 h]; Cost |  |  | C04ME22006C0 | PP3BM22003C0 | PA | C | P3 | M1 | ME | 220 | 03 | PB | N | BILL 2 | B02 | S1 | 1F | R00 | ACF04 | PB-3 | 220 | MEP | M1F |  | 1S |  |
| PP3BM23007C10 |  | PA-P3 ; 2nd Fix, Inst of VCD's/FD's (Mech RM)_PB-3 | 30d | 2012-05-26 | 2012-07-01 | PP3BM23002C10 | 101.88d | 24d | MECHANICAL [909.6 h]; Cost |  |  | C04ME23015C0 | PP3BM23007C0 | PA | C | P3 | M1 | ME | 230 | 07 | PB | N | BILL 2 | B02 | S1 | 2F | R00 | ACF07 | PB-3 | 230 | MEP |  |  | 2n |  |
| PP3BM23008C10 |  | PA-P3 ; 2nd Fix, Insulation of CHW pipe & Duct (Mech RM)_PB-3 | 30d | 2012-05-26 | 2012-07-01 | PP3BM23001C10, PP3BM23002C10 | 101.88d | 24d | MECHANICAL [2878.8 h]; Cost |  |  | C04ME23017C0 | PP3BM23008C0 | PA | C | P3 | M1 | ME | 230 | 08 | PB | N | BILL 2 | B02 | S1 | 2F | R00 | ACF07 | PB-3 | 230 | MEP |  |  | 2n |  |
| PP3BM26001C10 |  | PA-P3 ; 1st Fix, Inst of Cable Tray (Mech RM)_PB-3 | 24d | 2012-05-26 | 2012-06-24 | PP3BM04001C10, PP3BM23002C10 | 23.88d | 0d | ELECTRICAL [49.2 h]; Cost |  |  | C04ME26011C0 | PP3BM26001C0 | PA | C | P3 | M1 | ME | 260 | 01 | PB | N | BILL 2 | B02 | S1 | 1F | R00 | ACF04 | PB-3 | 260 | MEP | M1F |  | 1S |  |
| PP3BM26002C10 |  | PA-P3 ; 1st Fix, Inst of Trunking/Conduiting (Mech RM)_PB-3 | 24d | 2012-05-26 | 2012-06-24 | PP3BM23003C10, PP3BM04001C10, PP3BM23002C10 | 23.88d | 0d | ELECTRICAL [148.8 h]; Cost |  |  | C04ME26001C0 | PP3BM26002C0 | PA | C | P3 | M1 | ME | 260 | 02 | PB | N | BILL 2 | B02 | S1 | 1F | R00 | ACF04 | PB-3 | 260 | MEP | M1F |  | 1S |  |
| PP3BM27001C10 |  | PA-P3 ; 1st Fix, Inst of Trunking for ELV system (Mech RM)_PB-3 | 24d | 2012-05-26 | 2012-06-24 | PP3BM23002C10, PP3BM04001C10 | 23.88d | 0d | ELECTRICAL [416.4 h]; Cost |  |  | C04ME27010C0 | PP3BM27001C0 | PA | C | P3 | M1 | ME | 270 | 01 | PB | N | BILL 2 | B02 | S1 | 1F | R00 | ACF04 | PB-3 | 270 | MEP | M1F |  | 1S |  |
| PP3BM21105C10 |  | PA-P3 ; 2nd Fix, Inst of Zone Control Valve (Mech RM)_PB-3 | 30d | 2012-06-24 | 2012-07-29 | PP3BM23001C10, PP3BM23004C10 | 95.88d | 0d | MECHANICAL [572.4 h]; Cost |  |  | C04ME21117C0 | PP3BM21105C0 | PA | C | P3 | M1 | ME | 211 | 05 | PB | N | BILL 2 | B02 | S1 | 2F | R00 | ACF07 | PB-3 | 211 | MEP |  |  | 2n |  |
| PP3BM23005C10 |  | PA-P3 ; 2nd Fix, Inst of Equipment (FCU,FAN,PUMP) (Mech RM)_PB-3 | 30d | 2012-06-24 | 2012-07-29 | PP3BM23004C10 | 41.88d | 0d | MECHANICAL [1747.2 h]; Cost |  |  | C04ME23011C0 | PP3BM23005C0 | PA | C | P3 | M1 | ME | 230 | 05 | PB | N | BILL 2 | B02 | S1 | 2F | R00 | ACF04 | PB-3 | 230 | MEP |  |  | 2n | H |
| PP3BM23006C10 |  | PA-P3 ; 2nd Fix, Inst of VAV'S CHW connection (Mech RM)_PB-3 | 30d | 2012-06-24 | 2012-07-29 | PP3BM23004C10 | 77.88d | 0d | MECHANICAL [39.6 h]; Cost |  |  | C04ME23009C0 | PP3BM23006C0 | PA | C | P3 | M1 | ME | 230 | 06 | PB | N | BILL 2 | B02 | S1 | 2F | R00 | ACF07 | PB-3 | 230 | MEP |  |  | 2n |  |
| PP3BM26003C10 |  | PA-P3 ; 2nd Fix, Cable Pulling (Mech RM)_PB-3 | 30d | 2012-06-24 | 2012-07-29 | PP3BM26001C10 | 23.88d | 0d | ELECTRICAL [3186 h]; Cost |  |  | C04ME26007C0 | PP3BM26003C0 | PA | C | P3 | M1 | ME | 260 | 03 | PB | N | BILL 2 | B02 | S1 | 2F | R00 | ACF07 | PB-3 | 260 | MEP |  |  | 2n |  |
| PP3BM26004C10 |  | PA-P3 ; 2nd Fix, Inst of Equipment (DB, TR, SG) (Mech RM)_PB-3 | 30d | 2012-06-24 | 2012-07-29 | PP3BM23004C10 | 95.88d | 0d | ELECTRICAL [927.6 h]; Cost |  |  | C04ME26009C0 | PP3BM26004C0 | PA | C | P3 | M1 | ME | 260 | 04 | PB | N | BILL 2 | B02 | S1 | 2F | R00 | ACF04 | PB-3 | 260 | MEP |  |  | 2n | E |
| PP3BM26005C10 |  | PA-P3 ; 2nd Fix, Wiring for Power/Lighting/Emergency (Mech RM)_PB-3 | 30d | 2012-06-24 | 2012-07-29 | PP3BM26001C10, PP3BM26002C10, PP3BM26003C10 SS, PP3BM27001C10, PP3BM27002C10 SS | 23.88d | 0d | ELECTRICAL [60 h]; Cost |  |  | C04ME26005C0 | PP3BM26005C0 | PA | C | P3 | M1 | ME | 260 | 05 | PB | N | BILL 2 | B02 | S1 | 2F | R00 | ACF07 | PB-3 | 260 | MEP |  |  | 2n |  |
| PP3BM27002C10 |  | PA-P3 ; 1st Fix, Wiring/ Cabling work (Mech RM)_PB-3 | 24d | 2012-06-24 | 2012-07-22 | PP3BM26001C10 SS, PP3BM26002C10 SS, PP3BM27001C10 SS, PP3BM04001C10, PP3BM27001C10 | 23.88d | 0d | ELECTRICAL [60 h]; Cost |  |  | C04ME27001C0 | PP3BM27002C0 | PA | C | P3 | M1 | ME | 270 | 02 | PB | N | BILL 2 | B02 | S1 | 1F | R00 | ACF04 | PB-3 | 270 | MEP | M1F |  | 1S |  |
| PP3BM27003C10 |  | PA-P3 ; 2nd Fix, Inst of ELV Equipment (Panels) (Mech RM)_PB-3 | 30d | 2012-06-24 | 2012-07-29 | PP3BM23004C10 | 95.88d | 0d | ELECTRICAL [142.8 h]; Cost |  |  | C04ME27020C0 | PP3BM27003C0 | PA | C | P3 | M1 | ME | 270 | 03 | PB | N | BILL 2 | B02 | S1 | 2F | R00 | ACF04 | PB-3 | 270 | MEP |  |  | 2n | E |
| PP3BM09901C10 |  | PA-P3 ; Wall - final Paint (Mech RM)_PB-3 | 18d | 2012-07-29 | 2012-08-21 | PP3BM09902C10, PGLS103331C360, PGLS103331C370, PGLS103331C350, PGLS103331C340, PGLS103331C330, PGLS103391C220, PP3BM23006C10, PP2BE09502C0 SS | 95.88d | 72d | WALL PAINT [2037 h]; WALL PAINT [2541 m2]; Cost | 329 | 1470 | C04ME09903C0 | PP3BM09901C0 | PA | C | P3 | M1 | PA | 099 | 01 | PB | N | BILL 2 | B02 | S1 | 02 | R00 | ACF06 | PB-3 | 099 |  |  |  |  |  |
| PP3BM21107C10 |  | PA-P3 ; Final Fix, Inst of Sprinklers head (Mech RM)_PB-3 | 18d | 2012-07-29 | 2012-08-21 | PP3BM21104C10, PZ9GZ21159R2 FF, PGLS103331C360, PGLS103331C370, PGLS103331C350, PGLS103331C340, PGLS103331C330, PGLS103391C220, PP3BM23006C10, PP2BE09502C0 SS | 95.88d | 72d | MECHANICAL [1086 h]; Cost |  |  | C04ME21121C0 | PP3BM21107C0 | PA | C | P3 | M1 | ME | 211 | 07 | PB | N | BILL 2 | B02 | S1 | FF | R00 | ACF07 | PB-3 | 211 | MEP |  |  | FF |  |
| PP3BM23009C10 |  | PA-P3 ; Final Fix, Inst of Flexible Duct & Plenum boxes (Mech RM)_PB-3 | 18d | 2012-07-29 | 2012-08-21 | PP3BM23007C10, PP3BM23008C10, PGLS103331C360, PGLS103331C370, PGLS103331C350, PGLS103331C340, PGLS103331C330, PGLS103391C220, PP3BM23006C10, PP2BE09502C0 SS | 77.88d | 0d | MECHANICAL [26.4 h]; Cost |  |  | C04ME23023C0 | PP3BM23009C0 | PA | C | P3 | M1 | ME | 230 | 09 | PB | N | BILL 2 | B02 | S1 | FF | R00 | ACF07 | PB-3 | 230 | MEP |  |  | FF |  |
| PP3BM26007C10 |  | PA-P3 ; Final Fix, Inst of Light fittings (Mech RM)_PB-3 | 18d | 2012-07-29 | 2012-08-21 | PP3BM09902C10, PGLS103331C360, PGLS103331C370, PGLS103331C350, PGLS103331C340, PGLS103331C330, PGLS103391C220, PP3BM26005C10, PP2BE09502C0 SS | 95.88d | 72d | ELECTRICAL [2430 h]; Cost |  |  | C04ME26019C0 | PP3BM26007C0 | PA | C | P3 | M1 | ME | 260 | 07 | PB | N | BILL 2 | B02 | S1 | FF | R00 | ACF07 | PB-3 | 260 | MEP |  |  | FF |  |
| PP3BM26008C10 |  | PA-P3 ; Final Fix, Inst of Switch/Sockets (Mech RM)_PB-3 | 18d | 2012-07-29 | 2012-08-21 | PP3BM09902C10, PGLS103331C360, PGLS103331C370, PGLS103331C350, PGLS103331C340, PGLS103331C330, PGLS103391C220, PP3BM26005C10, PP2BE09502C0 SS | 23.88d | 0d | ELECTRICAL [97.2 h]; Cost |  |  | C04ME26017C0 | PP3BM26008C0 | PA | C | P3 | M1 | ME | 260 | 08 | PB | N | BILL 2 | B02 | S1 | FF | R00 | ACF07 | PB-3 | 260 | MEP |  |  | FF |  |
| PP3BM27004C10 |  | PA-P3 ; Final Fix, BMS connection work to Equipment (Mech RM)_PB-3 | 18d | 2012-07-29 | 2012-08-21 | PP3BM21105C10, PP3BM23004C10, PP3BM23005C10, PP3BM23007C10, PP3BM26004C10, PP3BM27002C10, PP3BM27003C10, PGLS103331C360, PGLS103331C370, PGLS103331C350, PGLS103331C340, PGLS103331C330, PGLS103391C220, PP2BE09502C0 SS | 95.88d | 72d | ELECTRICAL [1923.6 h]; Cost |  |  | C04ME27003C0 | PP3BM27004C0 | PA | C | P3 | M1 | ME | 270 | 04 | PB | N | BILL 2 | B02 | S1 | FF | R00 | ACF07 | PB-3 | 270 | MEP |  |  | FF |  |
| PP3BM27005C10 |  | PA-P3 ; Final Fix, Inst of ELV device (Detector/Speaker) (Mech RM)_PB-3 | 18d | 2012-07-29 | 2012-08-21 | PP3BM09902C10, PP3BM23006C10, PP3BM27003C10, PGLS103331C360, PGLS103331C370, PGLS103331C350, PGLS103331C340, PGLS103331C330, PGLS103391C220, PP2BE09502C0 SS | 95.88d | 72d | ELECTRICAL [61.2 h]; Cost |  |  | C04ME27030C0 | PP3BM27005C0 | PA | C | P3 | M1 | ME | 270 | 05 | PB | N | BILL 2 | B02 | S1 | FF | R00 | ACF07 | PB-3 | 270 | MEP |  |  | FF |  |
| PP3BM09203C10 |  | PA-P3 ; Partitions Closing (Mech RM)_PB-3 | 18d | 2012-08-21 | 2012-09-11 | PAFOA09201C1 FF, PP3BM09202C10, PP3BM22001C10, PP3BM22003C10, PP3BM08102C10 FF, PGLS103331C360, PGLS103331C370, PGLS103331C350, PGLS103331C340, PGLS103331C330, PGLS103391C220, PP3BM23005C10, PP2BE09502C0 SS, PP3BM26008C10 | 23.88d | 0d | PARTITIONS [31.11 m]; PARTITIONS [211 h]; Cost | 315 | 1464 | C04ME09205C0 | PP3BM09203C0 | PA | C | P3 | M1 | PT | 092 | 03 | PB | N | BILL 2 | B02 | S1 | FF | R00 | ACF06 | PB-3 | 092 | GP | P2F |  |  |  |
| PP3BM09601C10 |  | PA-P3 ; Floor Finishes (Mech RM)_PB-3 | 18d | 2012-08-21 | 2012-09-11 | PP3BM09203C10 SS, PGLS103331C360, PGLS103331C370, PGLS103331C350, PGLS103331C340, PGLS103331C330, PGLS103391C220, PP2BE09502C0 SS | 23.88d | 0d | ASSORTED FLOOR FINISH [16264 h]; ASSORTED FLOOR FINISH [9032.33 m2]; Cost | 326 | 1501 | C04ME09601C0 | PP3BM09601C0 | PA | C | P3 | M1 | FF | 096 | 01 | PB | N | BILL 2 | B02 | S1 | 01 | R00 | ACF06 | PB-3 | FF |  |  |  |  |  |
| PP3BM23010C10 |  | PA-P3 ; Final Fix, Inst of Grilles & Diffusers (Mech RM)_PB-3 | 18d | 2012-08-21 | 2012-09-11 | PP3BM23009C10, PGLS103331C360, PGLS103331C370, PGLS103331C350, PGLS103331C340, PGLS103331C330, PGLS103391C220, PP2BE09502C0 SS | 77.88d | 54d | MECHANICAL [385.2 h]; Cost |  |  | C04ME23021C0 | PP3BM23010C0 | PA | C | P3 | M1 | ME | 230 | 10 | PB | N | BILL 2 | B02 | S1 | FF | R00 | ACF07 | PB-3 | 230 | MEP |  |  | FF |  |
| PP3BM08103C10 |  | PA-P3 ; Metal Doors (Mech RM)_PB-3 | 18d | 2012-09-11 | 2012-10-02 | PP3BM08102C10, PGLS103331C360, PGLS103331C370, PGLS103331C350, PGLS103331C340, PGLS103331C330, PGLS103391C220, PP3BM09601C10, PP2BE09502C0 SS | 23.88d | 0d | METAL DOORS [319 h]; METAL DOORS [31.89 no]; Cost | 317 | 1466 | C04ME08105C0 | PP3BM08103C0 | PA | C | P3 | M1 | DO | 081 | 03 | PB | N | BILL 2 | B02 | S1 | DR | R00 | ACF06 | PB-3 | 081 |  |  | 08 |  |  |
| PP3BM21106C10 |  | PA-P3 ; Final Fix, Inst of Fire Extinguishers/FHC (Mech RM)_PB-3 | 18d | 2012-09-11 | 2012-10-02 | PP3BM09203C10, PGLS103331C360, PGLS103331C370, PGLS103331C350, PGLS103331C340, PGLS103331C330, PGLS103391C220, PP2BE09502C0 SS | 59.88d | 36d | MECHANICAL [1568.4 h]; Cost |  |  | C04ME21123C0 | PP3BM21106C0 | PA | C | P3 | M1 | ME | 211 | 06 | PB | N | BILL 2 | B02 | S1 | FF | R00 | ACF07 | PB-3 | 211 | MEP |  |  | FF |  |
| PP3BM22004C10 |  | PA-P3 ; Final Fix, Inst of All drain (Mech RM)_PB-3 | 18d | 2012-09-11 | 2012-10-02 | PP3BM09601C10, PGLS103331C360, PGLS103331C370, PGLS103331C350, PGLS103331C340, PGLS103331C330, PGLS103391C220, PP2BE09502C0 SS | 59.88d | 36d | PLUMBING [1677.6 h]; Cost |  |  | C04ME22003C0 | PP3BM22004C0 | PA | C | P3 | M1 | ME | 220 | 04 | PB | N | BILL 2 | B02 | S1 | FF | R00 | ACF07 | PB-3 | 220 | MEP |  |  | FF |  |
| PP3BM26006C10 |  | PA-P3 ; Final Fix, Inst of Ceiling rose (Mech RM)_PB-3 | 18d | 2012-09-11 | 2012-10-02 | PP3BM09203C10, PGLS103331C360, PGLS103331C370, PGLS103331C350, PGLS103331C340, PGLS103331C330, PGLS103391C220, PP2BE09502C0 SS | 59.88d | 36d | ELECTRICAL [19.2 h]; Cost |  |  | C04ME26015C0 | PP3BM26006C0 | PA | C | P3 | M1 | ME | 260 | 06 | PB | N | BILL 2 | B02 | S1 | FF | R00 | ACF07 | PB-3 | 260 | MEP |  |  | FF |  |
| PP3BM26009C10 |  | PA-P3 ; Final Fix, Termination & Gladding of Cables (Mech RM)_PB-3 | 18d | 2012-09-11 | 2012-10-02 | PP3BM09203C10, PP3BM26005C10, PGLS103331C360, PGLS103331C370, PGLS103331C350, PGLS103331C340, PGLS103331C330, PGLS103391C220, PP2BE09502C0 SS | 59.88d | 36d | ELECTRICAL [398.4 h]; Cost |  |  | C04ME26013C0 | PP3BM26009C0 | PA | C | P3 | M1 | ME | 260 | 09 | PB | N | BILL 2 | B02 | S1 | FF | R00 | ACF07 | PB-3 | 260 | MEP |  |  | FF |  |
| PP3BM08101C10 |  | PA-P3 ; Al / Glass doors (Mech RM)_PB-3 | 18d | 2012-10-02 | 2012-10-23 | OGNMU00059S0, OGNMU00065S0, PP3BM08103C10, PGLS103331C360, PGLS103331C370, PGLS103331C350, PGLS103331C340, PGLS103331C330, PGLS103391C220, PP2BE09502C0 SS | 23.88d | 0d | ASSORTED DOORS [506 h]; ASSORTED DOORS [50.56 no]; Cost |  |  | C04ME08109C0 | PP3BM08101C0 | PA | C | P3 | M1 | DO | 081 | 01 | PB | N | BILL 2 | B02 | S1 | 03 | R00 | ACF06 | PB-3 | 081 |  |  |  |  |  |
| PP3BM08701C10 |  | PA-P3 ; Ironmongery (Mech RM)_PB-3 | 18d | 2012-10-23 | 2012-11-17 | PP3BM08101C10, PP3BM08103C10, PGLS103331C360, PGLS103331C370, PGLS103331C350, PGLS103331C340, PGLS103331C330, PGLS103391C220, PP2BE09502C0 SS | 23.88d | 0d | IRONMONGERY [327 h]; IRONMONGERY [32.67 no]; Cost | 322 | 1467 | C04ME08709C0 | PP3BM08701C0 | PA | C | P3 | M1 | DO | 087 | 01 | PB | N | BILL 2 | B02 | S1 | IM | R00 | ACF06 | PB-3 | 087 |  |  | 08 |  |  |

| ID | WBS | Activity | Duration | Start | Finish | Predecessors | Complete | Remaining | Planned start | Planned finish | Total float | Free float | Resources | Cost | Actual cost | Change Order # | NEW ACTIVITY ID | change id | IDDD | CCAD BUILDING(SET) | CCAD PHASE(SET) | CCAD FLOOR(SET) | CCAD ZONE(SET) | CCAD WORK(SET) | CCAD SECTION(SET) | CCAD SERIAL No.(SET) | CCAD Carpark code(SET) | CCAD Carpark district code(set) | CCAD CBS(SET) | CCAD BILL(SET) | CCAD HANDOVER(SET) | CCAD TAG(SET) | CCAD REV(SET) | CCADACF (SET) | FSP CODE | CCAD SSCF | CCAD SUB ZONE MEP(SET) | CCAD CSA | Act Selector % | P_811 | P_711 |
| --- | --- | --- | --- | --- | --- | --- | --- | --- | --- | --- | --- | --- | --- | --- | --- | --- | --- | --- | --- | --- | --- | --- | --- | --- | --- | --- | --- | --- | --- | --- | --- | --- | --- | --- | --- | --- | --- | --- | --- | --- | --- |
|  | CP1 | **PARKING AREA ; Zone PC-1** |  | 2011-11-20 | 2012-10-01 |  |  |  |  |  |  |  |  |  |  |  |  |  |  |  |  |  |  |  |  |  |  |  |  |  |  |  |  |  |  |  |  |  |  |  |  |
| PP3CP09901C10 |  | PA-P3 ; Prime & 1st coat (Wall & Ceiling) (Parking Area)_PC-1 | 18d | 2011-11-20 | 2011-12-13 | PGLS603391C0 SS, PGLS703391C0 SS |  |  |  |  | 11.2d | 0d | CEILING PAINT [1694 h]; WALL PAINT [366 h]; CEILING PAINT [2112.6 m2]; WALL PAINT [456 m2]; Cost |  |  | 328 | 956 | CP3PA09901C0 | PP3CP09901C0 | PA | C | P3 | PK | PA | 099 | 01 | PC | S | BILL 2 | B02 | S2 | 01 | R00 | ACF06 | PC-1 | 099 |  |  |  |  |  |
| PP3CP21114C10 |  | PA-P3 ; 1st Fix, Fire Fighting system (Parking Area)_PC-1 | 30d | 2011-12-13 | 2012-01-18 | PP3CP09901C10 |  |  |  |  | 11.2d | 0d | MECHANICAL [482.4 h]; Cost |  |  |  |  | CP3PA21109C0 | PP3CP21114C0 | PA | C | P3 | PK | ME | 211 | 14 | PC | S | BILL 2 | B02 | S2 | 1F | R00 | ACF04 | PC-1 | 211 | 1S | MEP | M1F |  |  |
| PP3CP21124C10 |  | PA-P3 ; 2nd Fix, Fire Fighting system (Parking Area)_PC-1 | 30d | 2012-01-18 | 2012-02-23 | PP3CP21114C10 |  |  |  |  | 152.2d | 141d | MECHANICAL [482.4 h]; Cost |  |  |  |  | CP3PA21115C0 | PP3CP21124C0 | PA | C | P3 | PK | ME | 211 | 24 | PC | S | BILL 2 | B02 | S2 | 2F | R00 | ACF07 | PC-1 | 211 | 2n | MEP |  |  |  |
| PP3CP22015C10 |  | PA-P3 ; 1st Fix, Plumbing / Drainage System (Parking Area)_PC-1 | 30d | 2012-01-18 | 2012-02-23 | PP3CP21114C10 SS, PP3CP09901C10, PP3CP21114C10 |  |  |  |  | 68.2d | 0d | PLUMBING [1293.6 h]; Cost |  |  |  |  | CP3PA22001C0 | PP3CP22015C0 | PA | C | P3 | PK | ME | 220 | 15 | PC | S | BILL 2 | B02 | S2 | 1F | R00 | ACF04 | PC-1 | 220 | 1S | MEP | M1F |  |  |
| PP3CP22025C10 |  | PA-P3 ; 2nd Fix, Plumbing / Drainage System (Parking Area)_PC-1 | 30d | 2012-02-23 | 2012-03-29 | PP3CP22015C10 |  |  |  |  | 131.2d | 120d | PLUMBING [1293.6 h]; Cost |  |  |  |  | CP3PA22011C0 | PP3CP22025C0 | PA | C | P3 | PK | ME | 220 | 25 | PC | S | BILL 2 | B02 | S2 | 2F | R00 | ACF07 | PC-1 | 220 | 2n | MEP |  |  |  |
| PP3CP23011C10 |  | PA-P3 ; 1st Fix, CHW / HVAC System (Parking Area)_PC-1 | 30d | 2012-02-23 | 2012-03-29 | PP3CP22015C10 SS, PP3CP09901C10, PP3CP22015C10 |  |  |  |  | 68.2d | 0d | MECHANICAL [3345.6 h]; Cost |  |  |  |  | CP3PA23001C0 | PP3CP23011C0 | PA | C | P3 | PK | ME | 230 | 11 | PC | S | BILL 2 | B02 | S2 | 1F | R00 | ACF04 | PC-1 | 230 | 1S | MEP | M1F |  |  |
| PP3CP23021C10 |  | PA-P3 ; 2nd Fix, CHW / HVAC System (Parking Area)_PC-1 | 30d | 2012-03-29 | 2012-05-03 | PP3CP23011C10 |  |  |  |  | 110.2d | 99d | MECHANICAL [3345.6 h]; Cost |  |  |  |  | CP3PA23011C0 | PP3CP23021C0 | PA | C | P3 | PK | ME | 230 | 21 | PC | S | BILL 2 | B02 | S2 | 2F | R00 | ACF07 | PC-1 | 230 | 2n | MEP |  |  |  |
| PP3CP26012C10 |  | PA-P3 ; 1st Fix, Electrical System (Parking Area)_PC-1 | 30d | 2012-03-29 | 2012-05-03 | PP3CP21114C10 SS, PP3CP09901C10, PP3CP23011C10 |  |  |  |  | 68.2d | 0d | ELECTRICAL [3112.8 h]; Cost |  |  |  |  | CP3PA26001C0 | PP3CP26012C0 | PA | C | P3 | PK | ME | 260 | 12 | PC | S | BILL 2 | B02 | S2 | 1F | R00 | ACF04 | PC-1 | 260 | 1S | MEP | M1F |  |  |
| PP3CP26022C10 |  | PA-P3 ; 2nd Fix, Electrical System (Parking Area)_PC-1 | 30d | 2012-05-03 | 2012-06-07 | PP3CP26012C10 |  |  |  |  | 89.2d | 78d | ELECTRICAL [3112.8 h]; Cost |  |  |  |  | CP3PA26005C0 | PP3CP26022C0 | PA | C | P3 | PK | ME | 260 | 22 | PC | S | BILL 2 | B02 | S2 | 2F | R00 | ACF07 | PC-1 | 260 | 2n | MEP |  |  |  |
| PP3CP27013C10 |  | PA-P3 ; 1st Fix, ELV system (Parking Area)_PC-1 | 30d | 2012-05-03 | 2012-06-07 | PP3CP09901C10, PP3CP26012C10 |  |  |  |  | 68.2d | 0d | ELECTRICAL [506.4 h]; Cost |  |  |  |  | CP3PA27010C0 | PP3CP27013C0 | PA | C | P3 | PK | ME | 270 | 13 | PC | S | BILL 2 | B02 | S2 | 1F | R00 | ACF04 | PC-1 | 270 | 1S | MEP | M1F |  |  |
| PP3CP27023C10 |  | PA-P3 ; 2nd Fix, ELV system (Parking Area)_PC-1 | 30d | 2012-06-07 | 2012-07-14 | PP3CP27013C10 |  |  |  |  | 68.2d | 57d | ELECTRICAL [506.4 h]; Cost |  |  |  |  | CP3PA27020C0 | PP3CP27023C0 | PA | C | P3 | PK | ME | 270 | 23 | PC | S | BILL 2 | B02 | S2 | 2F | R00 | ACF07 | PC-1 | 270 | 2n | MEP |  |  |  |
| PP3CP09902C10 |  | PA-P3 ; 2nd coat (Wall & Ceiling) (Parking Area)_PC-1 | 18d | 2012-07-28 | 2012-08-18 | PP3CP09901C10, PGLS703391C10, PGLS603391C10, PP1S103331C320, PP1S103331C310 |  |  |  |  | 11.2d | 0d | CEILING PAINT [912 h]; WALL PAINT [198 h]; CEILING PAINT [1137.6 m2]; WALL PAINT [245.4 m2]; Cost |  |  | 329 | 957 | CP3PA09903C0 | PP3CP09902C0 | PA | C | P3 | PK | PA | 099 | 02 | PC | S | BILL 2 | B02 | S2 | 02 | R00 | ACF06 | PC-1 | 099 |  |  |  |  |  |
| PP3CP21113C10 |  | PA-P3 ; Final Fix, Fire Fighting system (Parking Area)_PC-1 | 9d | 2012-08-07 | 2012-08-18 | PP3CP09902C10 FF, PP3CP21124C10, PGLS703391C10, PGLS603391C10, PP1S103331C320, PP1S103331C310 |  |  |  |  | 11.2d | 0d | MECHANICAL [482.4 h]; Cost |  |  |  |  | CP3PA21113C0 | PP3CP21113C0 | PA | C | P3 | PK | ME | 211 | 13 | PC | S | BILL 2 | B02 | S2 | FF | R00 | ACF07 | PC-1 | 211 | FF | MEP |  |  |  |
| PP3CP22011C10 |  | PA-P3 ; Final Fix, Drainage System (Parking Area)_PC-1 | 9d | 2012-08-18 | 2012-08-30 | PP3CP09902C10 FF, PP3CP22025C10, PGLS703391C10, PGLS603391C10, PP1S103331C320, PP1S103331C310, PP3CP21113C10 |  |  |  |  | 11.2d | 0d | PLUMBING [1293.6 h]; Cost |  |  |  |  | CP3PA22011C0 | PP3CP22011C0 | PA | C | P3 | PK | ME | 220 | 11 | PC | S | BILL 2 | B02 | S2 | FF | R00 | ACF07 | PC-1 | 220 | FF | MEP |  |  |  |
| PP3CP23019C10 |  | PA-P3 ; Final Fix, CHW / HVAC System (Parking Area)_PC-1 | 9d | 2012-08-30 | 2012-09-10 | PP3CP09902C10 FF, PP3CP23021C10, PGLS703391C10, PGLS603391C10, PP1S103331C320, PP1S103331C310, PP3CP22011C10 |  |  |  |  | 11.2d | 0d | MECHANICAL [3345.6 h]; Cost |  |  |  |  | CP3PA23019C0 | PP3CP23019C0 | PA | C | P3 | PK | ME | 230 | 19 | PC | S | BILL 2 | B02 | S2 | FF | R00 | ACF07 | PC-1 | 230 | FF | MEP |  |  |  |
| PP3CP26017C10 |  | PA-P3 ; Final Fix, Electrical System (Parking Area)_PC-1 | 9d | 2012-09-10 | 2012-09-20 | PP3CP09902C10 FF, PP3CP26022C10, PGLS703391C10, PGLS603391C10, PP1S103331C320, PP1S103331C310, PP3CP23019C10 |  |  |  |  | 11.2d | 0d | ELECTRICAL [3112.8 h]; Cost |  |  |  |  | CP3PA26017C0 | PP3CP26017C0 | PA | C | P3 | PK | ME | 260 | 17 | PC | S | BILL 2 | B02 | S2 | FF | R00 | ACF07 | PC-1 | 260 | FF | MEP |  |  |  |
| PP3CP05509C10 |  | PA-P3 ; Grill & Louvers (Parking Area)_PC-1 | 9d | 2012-09-20 | 2012-10-01 | PP3CP09903C10 FF, PGLS703391C10, PGLS603391C10, PP1S103331C320, PP1S103331C310 |  |  |  |  | 11.2d | 3d | SECONDARY STEEL [259 h]; Cost |  |  | 328 | 956 | CP3PA09901C0 | PP3AP09901C0 | PA | C | P3 | PK | SW | 055 | 01 | PC | S | BILL 2 | B02 | S2 | 02 | R00 | ACF03 | PC-1 | 056 |  |  |  |  |  |
| PP3CP09903C10 |  | PA-P3 ; Concrete Sealer (Floor) (Parking Area)_PC-1 | 9d | 2012-09-20 | 2012-10-01 | PP3CP21113C10 FF, PP3CP22011C10 FF, PP3CP23019C10 FF, PP3CP26017C10 FF, PP3CP27030C10 FF, PGLS703391C10, PGLS603391C10, PP1S103331C320, PP1S103331C310 |  |  |  |  | 11.2d | 0d | ASSORTED FLOOR FINISH [2848 h]; ASSORTED FLOOR FINISH [1579.2 m2]; Cost |  |  |  |  | AP3PK09903C0 | PP3CP09903C0 | PA | C | P3 | PK | FF | 096 | 03 | PC | S | BILL 2 | B02 | S2 | 05 | R00 | ACF06 | PC-1 | CS |  |  |  |  |  |
| PP3CP11004C10 |  | PA-P3 ; Floor Marking & Signage (Parking Area)_PC-1 | 9d | 2012-09-20 | 2012-10-01 | PP3CP09903C10 FF, PP3CP11006C10 FF, PGLS703391C10, PGLS603391C10, PP1S103331C320, PP1S103331C310 |  |  |  |  | 11.2d | 3d | SIGNAGES [658 h]; SIGNAGES [91.2 no]; Cost |  |  |  |  | AP3PK11004C0 | PP3CP11004C0 | PA | C | P3 | PK | SA | 110 | 04 | PC | S | BILL 2 | B02 | S2 | 09 | R00 | ACF08 | PC-1 | c |  |  |  |  |  |
| PP3CP27030C10 |  | PA-P3 ; Final Fix, ELV system (Parking Area)_PC-1 | 9d | 2012-09-20 | 2012-10-01 | PP3CP09902C10 FF, PP3CP27023C10, PP3CP27023C10 FF, PGLS703391C10, PGLS603391C10, PP1S103331C320, PP1S103331C310, PP3CP26017C10 |  |  |  |  | 11.2d | 0d | ELECTRICAL [506.4 h]; Cost |  |  |  |  | CP3PA27030C0 | PP3CP27030C0 | PA | C | P3 | PK | ME | 270 | 30 | PC | S | BILL 2 | B02 | S2 | FF | R00 | ACF07 | PC-1 | 270 | FF | MEP |  |  |  |
| PP3CP11006C10 |  | PA-P3 ; Wall Protection (WP, CG, WG, FCG) (Parking Area)_PC-1 | 6d | 2012-09-24 | 2012-10-01 | PP3CP09903C10 FF, PGLS703391C10, PGLS603391C10, PP1S103331C320, PP1S103331C310 |  |  |  |  | 11.2d | 0d | FF&E [54 h]; Cost |  |  | 326 | 1001 | CP3PA11001C0 | PP3CP11006C0 | PA | C | P3 | PK | WF | 097 | 06 | PC | S | BILL 2 | B02 | S2 | 03 | R00 | ACF08 | PC-1 | 097 |  |  |  |  |  |
|  | CP2 | **PARKING AREA ; Zone PC-2** |  | 2011-08-10 | 2012-09-17 |  |  |  |  |  |  |  |  |  |  |  |  |  |  |  |  |  |  |  |  |  |  |  |  |  |  |  |  |  |  |  |  |  |  |  |  |
| PP3CP21114C20 |  | PA-P3 ; 1st Fix, Fire Fighting system (Parking Area)_PC-2 | 9d | 2011-08-10 A | 2011-08-30 A | PP3CP09901C20 | 100% |  | 2011-07-31 | 2011-08-09 |  |  | MECHANICAL [321.6 h]; Cost [21954.2 AED] | 21,954.21 | 21,954.21 |  |  | CP3PA21109C0 | PP3CP21114C0 | PA | C | P3 | PK | ME | 211 | 14 | PC | S | BILL 2 | B02 | S2 | 1F | R00 | ACF04 | PC-2 | 211 | 1S | MEP | M1F | 100 | 0 |
| PP3CP21124C20 |  | PA-P3 ; 2nd Fix, Fire Fighting system (Parking Area)_PC-2 | 4.72d | 2011-08-10 A | 2011-09-29 A | PP3CP21114C20 | 100% |  | 2011-08-10 | 2011-08-15 |  |  | MECHANICAL [321.6 h]; Cost [21954.2 AED] | 21,954.21 | 21,954.21 |  |  | CP3PA21115C0 | PP3CP21124C0 | PA | C | P3 | PK | ME | 211 | 24 | PC | S | BILL 2 | B02 | S2 | 2F | R00 | ACF07 | PC-2 | 211 | 2n | MEP |  | 50 | 0 |
| PP3CP22015C20 |  | PA-P3 ; 1st Fix, Plumbing / Drainage System (Parking Area)_PC-2 | 5d | 2011-08-10 A | 2011-08-30 A | PP3CP21114C20 SS, PP3CP26012C20 SS, PP3CP09901C20 | 100% |  | 2011-08-28 | 2011-09-05 |  |  | PLUMBING [862.8 h]; Cost [58871.8 AED] | 58,871.75 | 58,871.75 |  |  | CP3PA22001C0 | PP3CP22015C0 | PA | C | P3 | PK | ME | 220 | 15 | PC | S | BILL 2 | B02 | S2 | 1F | R00 | ACF04 | PC-2 | 220 | 1S | MEP | M1F | 100 | 0 |
| PP3CP22025C20 |  | PA-P3 ; 2nd Fix, Plumbing / Drainage System (Parking Area)_PC-2 | 9d | 2011-08-10 A | 2011-09-29 A | PP3CP22015C20 | 100% |  | 2011-09-05 | 2011-09-15 |  |  | PLUMBING [862.8 h]; Cost [58871.8 AED] | 58,871.75 | 58,871.75 |  |  | CP3PA22011C0 | PP3CP22025C0 | PA | C | P3 | PK | ME | 220 | 25 | PC | S | BILL 2 | B02 | S2 | 2F | R00 | ACF07 | PC-2 | 220 | 2n | MEP |  | 50 | 0 |
| PP3CP23011C20 |  | PA-P3 ; 1st Fix, CHW / HVAC System (Parking Area)_PC-2 | 6d | 2011-08-10 A | 2011-08-30 A | PP3CP22015C20 SS, PP3CP09901C20 | 100% |  | 2012-03-21 | 2012-03-28 |  |  | MECHANICAL [2230.8 h]; Cost [152284 AED] | 152,284.12 | 152,284.12 |  |  | CP3PA23001C0 | PP3CP23011C0 | PA | C | P3 | PK | ME | 230 | 11 | PC | S | BILL 2 | B02 | S2 | 1F | R00 | ACF04 | PC-2 | 230 | 1S | MEP | M1F | 100 | 0 |
| PP3CP26012C20 |  | PA-P3 ; 1st Fix, Electrical System (Parking Area)_PC-2 | 10.78d | 2011-08-10 A | 2011-08-30 A | PP3CP21114C20 SS, PP3CP09901C20 | 100% |  | 2011-08-16 | 2011-08-28 |  |  | ELECTRICAL [2074.8 h]; Cost [139137 AED] | 139,137.27 | 139,137.27 |  |  | CP3PA26001C0 | PP3CP26012C0 | PA | C | P3 | PK | ME | 260 | 12 | PC | S | BILL 2 | B02 | S2 | 1F | R00 | ACF04 | PC-2 | 260 | 1S | MEP | M1F | 100 | 0 |
| PP3CP26022C20 |  | PA-P3 ; 2nd Fix, Electrical System (Parking Area)_PC-2 | 6d | 2011-08-10 A | 2011-10-27 | PP3CP26012C20 | 16% | 5.04d | 2011-08-28 | 2011-09-06 | 274.96d | 251.76d | ELECTRICAL [2074.8 h]; Cost [139137 AED] | 139,137.27 | 20,870.59 |  |  | CP3PA26005C0 | PP3CP26022C0 | PA | C | P3 | PK | ME | 260 | 22 | PC | S | BILL 2 | B02 | S2 | 2F | R00 | ACF07 | PC-2 | 260 | 2n | MEP |  | 15 | 0 |
| PP3CP27013C20 |  | PA-P3 ; 1st Fix, ELV system (Parking Area)_PC-2 | 9d | 2011-08-10 A | 2011-10-29 | PP3CP26012C20 SS, PP3CP09901C20 | 30% | 6.3d | 2011-09-04 | 2011-09-13 | 274.08d | 0d | ELECTRICAL [337.2 h]; Cost [21051.9 AED] | 21,051.93 | 6,315.58 |  |  | CP3PA27010C0 | PP3CP27013C0 | PA | C | P3 | PK | ME | 270 | 13 | PC | S | BILL 2 | B02 | S2 | 1F | R00 | ACF04 | PC-2 | 270 | 1S | MEP | M1F | 30 | 0 |
| PP3CP11006C20 |  | PA-P3 ; Wall Protection (WP, CG, WG, FCG) (Parking Area)_PC-2 | 6d | 2011-09-05 A | 2012-09-10 | PP3CP09903C20 FF, PGLS703391C10, PGLS603391C10, PP1S103331C320, PP1S103331C310 | 95% | 0.3d | 2012-06-20 | 2012-06-27 | 29.2d | 6d | FF&E [37 h]; Cost |  |  | 326 | 1001 | CP3PA11001C0 | PP3CP11006C0 | PA | C | P3 | PK | WF | 097 | 06 | PC | S | BILL 2 | B02 | S2 | 03 | R00 | ACF08 | PC-2 | 097 |  |  |  |  |  |
| PP3CP09901C20 |  | PA-P3 ; Prime & 1st coat (Wall & Ceiling) (Parking Area)_PC-2 | 18d | 2011-10-01 | 2011-10-20 | PGLS703392C0 |  |  |  |  | 256d | 0d | CEILING PAINT [1128 h]; WALL PAINT [244 h]; CEILING PAINT [1408.4 m2]; WALL PAINT [304 m2]; Cost |  |  | 328 | 956 | CP3PA09901C0 | PP3CP09901C0 | PA | C | P3 | PK | PA | 099 | 01 | PC | S | BILL 2 | B02 | S2 | 01 | R00 | ACF06 | PC-2 | 099 |  |  |  |  |  |
| PP3CP23021C20 |  | PA-P3 ; 2nd Fix, CHW / HVAC System (Parking Area)_PC-2 | 8.86d | 2011-10-22 | 2011-10-31 | PP3CP23011C20 |  |  |  |  | 265.14d | 241.94d | MECHANICAL [2230.8 h]; Cost |  |  |  |  | CP3PA23011C0 | PP3CP23021C0 | PA | C | P3 | PK | ME | 230 | 21 | PC | S | BILL 2 | B02 | S2 | 2F | R00 | ACF07 | PC-2 | 230 | 2n | MEP |  |  |  |
| PP3CP27023C20 |  | PA-P3 ; 2nd Fix, ELV system (Parking Area)_PC-2 | 5.62d | 2011-10-29 | 2011-11-03 | PP3CP27013C20 |  |  |  |  | 274.08d | 250.88d | ELECTRICAL [337.2 h]; Cost |  |  |  |  | CP3PA27020C0 | PP3CP27023C0 | PA | C | P3 | PK | ME | 270 | 23 | PC | S | BILL 2 | B02 | S2 | 2F | R00 | ACF07 | PC-2 | 270 | 2n | MEP |  |  |  |
| PP3CP09902C20 |  | PA-P3 ; 2nd coat (Wall & Ceiling) (Parking Area)_PC-2 | 6d | 2012-07-28 | 2012-08-04 | PP3CP09901C20, PGLS703391C10, PGLS603391C10, PP1S103331C320, PP1S103331C310 |  |  |  |  | 23.2d | 0d | CEILING PAINT [608 h]; WALL PAINT [132 h]; CEILING PAINT [758.4 m2]; WALL PAINT [163.6 m2]; Cost |  |  | 329 | 957 | CP3PA09903C0 | PP3CP09902C0 | PA | C | P3 | PK | PA | 099 | 02 | PC | S | BILL 2 | B02 | S2 | 02 | R00 | ACF06 | PC-2 | 099 |  |  |  |  |  |
| PP3CP21113C20 |  | PA-P3 ; Final Fix, Fire Fighting system (Parking Area)_PC-2 | 6d | 2012-08-04 | 2012-08-11 | PP3CP09902C20, PP3CP21124C20, PGLS703391C10, PGLS603391C10, PP1S103331C320, PP1S103331C310 |  |  |  |  | 23.2d | 0d | MECHANICAL [321.6 h]; Cost |  |  |  |  | CP3PA21113C0 | PP3CP21113C0 | PA | C | P3 | PK | ME | 211 | 13 | PC | S | BILL 2 | B02 | S2 | FF | R00 | ACF07 | PC-2 | 211 | FF | MEP |  |  |  |
| PP3CP22011C20 |  | PA-P3 ; Final Fix, Drainage System (Parking Area)_PC-2 | 6d | 2012-08-11 | 2012-08-18 | PP3CP09902C20, PP3CP22025C20, PGLS703391C10, PGLS603391C10, PP1S103331C320, PP1S103331C310, PP3CP21113C20 |  |  |  |  | 23.2d | 0d | PLUMBING [862.8 h]; Cost |  |  |  |  | CP3PA22011C0 | PP3CP22011C0 | PA | C | P3 | PK | ME | 220 | 11 | PC | S | BILL 2 | B02 | S2 | FF | R00 | ACF07 | PC-2 | 220 | FF | MEP |  |  |  |
| PP3CP23019C20 |  | PA-P3 ; Final Fix, CHW / HVAC System (Parking Area)_PC-2 | 6d | 2012-08-18 | 2012-08-27 | PP3CP09902C20, PP3CP23021C20, PGLS703391C10, PGLS603391C10, PP1S103331C320, PP1S103331C310, PP3CP22011C20 |  |  |  |  | 23.2d | 0d | MECHANICAL [2230.8 h]; Cost |  |  |  |  | CP3PA23019C0 | PP3CP23019C0 | PA | C | P3 | PK | ME | 230 | 19 | PC | S | BILL 2 | B02 | S2 | FF | R00 | ACF07 | PC-2 | 230 | FF | MEP |  |  |  |
| PP3CP26017C20 |  | PA-P3 ; Final Fix, Electrical System (Parking Area)_PC-2 | 6d | 2012-08-27 | 2012-09-03 | PP3CP09902C20, PP3CP26022C20, PGLS703391C10, PGLS603391C10, PP1S103331C320, PP1S103331C310, PP3CP23019C20 |  |  |  |  | 23.2d | 0d | ELECTRICAL [2074.8 h]; Cost |  |  |  |  | CP3PA26017C0 | PP3CP26017C0 | PA | C | P3 | PK | ME | 260 | 17 | PC | S | BILL 2 | B02 | S2 | FF | R00 | ACF07 | PC-2 | 260 | FF | MEP |  |  |  |
| PP3CP09903C20 |  | PA-P3 ; Concrete Sealer (Floor) (Parking Area)_PC-2 | 6d | 2012-09-03 | 2012-09-10 | PP3CP21113C20 FF, PP3CP22011C20 FF, PP3CP23019C20 FF, PP3CP26017C20 FF, PP3CP27030C20 FF, PGLS703391C10, PGLS603391C10, PP1S103331C320, PP1S103331C310 |  |  |  |  | 23.2d | 0d | ASSORTED FLOOR FINISH [1896 h]; ASSORTED FLOOR FINISH [1052.8 m2]; Cost |  |  |  |  | AP3PK09903C0 | PP3CP09903C0 | PA | C | P3 | PK | FF | 096 | 03 | PC | S | BILL 2 | B02 | S2 | 05 | R00 | ACF06 | PC-2 | CS |  |  |  |  |  |
| PP3CP27030C20 |  | PA-P3 ; Final Fix, ELV system (Parking Area)_PC-2 | 6d | 2012-09-03 | 2012-09-10 | PP3CP09902C20, PP3CP27023C20, PP3CP27023C20 FF, PGLS703391C10, PGLS603391C10, PP1S103331C320, PP1S103331C310, PP3CP26017C20 |  |  |  |  | 23.2d | 0d | ELECTRICAL [337.2 h]; Cost |  |  |  |  | CP3PA27030C0 | PP3CP27030C0 | PA | C | P3 | PK | ME | 270 | 30 | PC | S | BILL 2 | B02 | S2 | FF | R00 | ACF07 | PC-2 | 270 | FF | MEP |  |  |  |
| PP3CP05509C20 |  | PA-P3 ; Grill & Louvers (Parking Area)_PC-2 | 6d | 2012-09-10 | 2012-09-17 | PP3CP09903C20, PGLS703391C10, PGLS603391C10, PP1S103331C320, PP1S103331C310 |  |  |  |  | 23.2d | 15d | SECONDARY STEEL [172 h]; Cost |  |  | 328 | 956 | CP3PA09901C0 | PP3AP09901C0 | PA | C | P3 | PK | SW | 055 | 01 | PC | S | BILL 2 | B02 | S2 | 02 | R00 | ACF03 | PC-2 | 056 |  |  |  |  |  |
| PP3CP11004C20 |  | PA-P3 ; Floor Marking & Signage (Parking Area)_PC-2 | 6d | 2012-09-10 | 2012-09-17 | PP3CP09903C20, PP3CP11006C20 FF, PGLS703391C10, PGLS603391C10, PP1S103331C320, PP1S103331C310 |  |  |  |  | 23.2d | 15d | SIGNAGES [438 h]; SIGNAGES [60.8 no]; Cost |  |  |  |  | AP3PK11004C0 | PP3CP11004C0 | PA | C | P3 | PK | SA | 110 | 04 | PC | S | BILL 2 | B02 | S2 | 09 | R00 | ACF08 | PC-2 | c |  |  |  |  |  |

| ID | WBS | Activity | Duration | Start | Finish | Predecessors | Total float | Free float | Resources | NEW ACTIVITY ID | change id | IDDD | CCAD BUILDING(SET) | CCAD PHASE(SET) | CCAD FLOOR(SET) | CCAD ZONE(SET) | CCAD WORK(SET) | CCAD SECTION(SET) | CCAD SERIAL No.(SET) | CCAD Carpark code(SET) | CCAD Carpark district code(set) | CCAD CBS(SET) | CCAD BILL(SET) | CCAD HANDOVER(SET) | CCAD TAG(SET) | CCAD REV(SET) | CCADACF (SET) | FSP CODE | CCAD SSCF | Change Order # | CCAD DIVISION(SET) | CCAD CSA | Act Selector % | CCAD SUB ZONE MEP(SET) | CCAD MEQ |
| --- | --- | --- | --- | --- | --- | --- | --- | --- | --- | --- | --- | --- | --- | --- | --- | --- | --- | --- | --- | --- | --- | --- | --- | --- | --- | --- | --- | --- | --- | --- | --- | --- | --- | --- | --- |
|  | CE1 | **ELECTRICAL ROOMS (3 NOS.) ; Zone PC-1** |  | 2011-12-17 | 2012-09-10 |  |  |  |  |  |  |  |  |  |  |  |  |  |  |  |  |  |  |  |  |  |  |  |  |  |  |  |  |  |  |
| PP3CE09903C0 |  | PA-P3 ; Ceiling Prime & 1st coat (Elec RM)_PC-1 | 18d | 2011-12-17 | 2012-01-08 | PGLS603391C0, PGLS703391C0 | 19.2d | 0d | ASSORTED CEILING FINISH [7 h]; Cost | 1544 | CP2ME09905C0 | PP3CE09903C0 | PA | C | P3 | ER | PA | 099 | 03 | PC | S | BILL 2 | B02 | S2 | 01 | R00 | ACF06 | PC-1 | 099 |  |  |  |  |  |  |
| PP3CE04001C0 |  | PA-P3 ; Block Wall Works (Elec RM)_PC-1 | 30d | 2012-01-08 | 2012-02-13 | PP3CE09903C0 | 71.2d | 0d | BLOCKWORKS [644 h]; BLOCKWORKS [184 m2]; Cost |  | AP3ER04001C0 | PP3CE04001C0 | PA | C | P3 | ER | BL | 040 | 01 | PC | S | BILL 2 | B02 | S2 | BL | R00 | ACF06 | PC-1 | 040 |  |  |  |  |  |  |
| PP3CE08109C0 |  | PA-P3 ; Access Floor (Elec RM)_PC-1 | 18d | 2012-02-13 | 2012-03-05 | PP3CE09902C0 FF | 138.2d | 0d | ASSORTED FLOOR FINISH [184 h]; ASSORTED FLOOR FINISH [99 m2]; Cost | 1375 | CP2ER08105C0 |  | PA | C | P3 | ER | FF | 096 | 09 | PC | S | BILL 2 | B02 | S2 | 04 | R00 | ACF06 | PC-1 | AF | 317 | 08 |  |  |  |  |
| PP3CE09201C0 |  | PA-P3 ; Metal Studs (Elec RM)_PC-1 | 10d | 2012-02-13 | 2012-02-25 | PP3CE04001C0 | 148.45d | 0d | PARTITIONS [29 h]; PARTITIONS [4 m]; Cost | 1372 | CP2ME09201C0 | PP3CE09201C0 | PA | C | P3 | ER | PT | 092 | 01 | PC | S | BILL 2 | B02 | S2 | 1F | R00 | ACF06 | PC-1 | 092 | 313 |  | GP | PMS |  |  |
| PP3CE09902C0 |  | PA-P3 ; Wall Prime & 1st coat (Elec RM)_PC-1 | 18d | 2012-02-13 | 2012-03-05 | PP3CE04001C0 | 138.2d | 0d | WALL PAINT [608 h]; WALL PAINT [758 m2]; Cost | 1378 | CP2ME09901C0 | PP3CE09902C0 | PA | C | P3 | ER | PA | 099 | 02 | PC | S | BILL 2 | B02 | S2 | 01 | R00 | ACF06 | PC-1 | 099 | 328 |  |  |  |  |  |
| PP3CE23001C0 |  | PA-P3 ; 1st Fix, Inst. of Supports for MEP (Elec RM)_PC-1 | 12d | 2012-02-13 | 2012-02-27 | PP3CE04001C0 | 71.2d | 0d | MECHANICAL [625.2 h]; Cost |  | CP2ME23010C0 | PP3CE23001C0 | PA | C | P3 | ER | ME | 230 | 01 | PC | S | BILL 2 | B02 | S2 | 1F | R00 | ACF04 | PC-1 | 230 |  |  | MEP | M1F | 1S |  |
| PP3CE08102C0 |  | PA-P3 ; Metal Door Frames (Elec RM)_PC-1 | 18d | 2012-02-25 | 2012-03-17 | PP3CE09201C0, GNHE08101C0 | 162.45d | 113d | METAL DOORS [58 h]; Cost | 1374 | CP2ME08101C0 | PP3CE08102C0 | PA | C | P3 | ER | DO | 081 | 02 | PC | S | BILL 2 | B02 | S2 | DF | R00 | ACF06 | PC-1 | 081 | 316 | 08 |  |  |  |  |
| PP3CE09202C0 |  | PA-P3 ; Partitions 1st face (Elec RM)_PC-1 | 25.75d | 2012-02-27 | 2012-03-28 | PP3CE09201C0 SS+12d | 148.45d | 103.25d | PARTITIONS [4 m]; PARTITIONS [32 h]; Cost | 1373 | CP2ME09203C0 | PP3CE09202C0 | PA | C | P3 | ER | PT | 092 | 02 | PC | S | BILL 2 | B02 | S2 | 2F | R00 | ACF06 | PC-1 | 092 | 314 |  | GP | P1F |  |  |
| PP3CE23002C0 |  | PA-P3 ; 1st Fix, Inst of CHW pipe (Elec RM)_PC-1 | 30d | 2012-02-27 | 2012-04-02 | PP3CE23001C0, PP3CE04001C0 | 107.2d | 30d | MECHANICAL [3097.2 h]; Cost |  | CP2ME23012C0 | PP3CE23002C0 | PA | C | P3 | ER | ME | 230 | 02 | PC | S | BILL 2 | B02 | S2 | 1F | R00 | ACF04 | PC-1 | 230 |  |  | MEP | M1F | 1S |  |
| PP3CE23003C0 |  | PA-P3 ; 1st Fix, Inst of Ducting (Elec RM)_PC-1 | 30d | 2012-02-27 | 2012-04-02 | PP3CE23001C0, PP3CE04001C0 | 71.2d | 0d | MECHANICAL [3948 h]; Cost |  | CP2ME23014C0 | PP3CE23003C0 | PA | C | P3 | ER | ME | 230 | 03 | PC | S | BILL 2 | B02 | S2 | 1F | R00 | ACF04 | PC-1 | 230 |  |  | MEP | M1F | 1S |  |
| PP3CE23007C0 |  | PA-P3 ; 2nd Fix, Inst of VAV'S CHW connection (Elec RM)_PC-1 | 30d | 2012-02-27 | 2012-04-02 | PP3CE23001C0 | 107.2d | 30d | MECHANICAL [50.4 h]; Cost |  | CP2ME23020C0 | PP3CE23007C0 | PA | C | P3 | ER | ME | 230 | 07 | PC | S | BILL 2 | B02 | S2 | 2F | R00 | ACF07 | PC-1 | 230 |  |  | MEP |  | 2n |  |
| PP3CE23010C0 |  | PA-P3 ; 2nd Fix, Insulation of CHW pipe & Duct (Elec RM)_PC-1 | 30d | 2012-02-27 | 2012-04-02 | PP3CE23001C0 | 107.2d | 30d | MECHANICAL [3702 h]; Cost |  | CP2ME23026C0 | PP3CE23010C0 | PA | C | P3 | ER | ME | 230 | 10 | PC | S | BILL 2 | B02 | S2 | 2F | R00 | ACF07 | PC-1 | 230 |  |  | MEP |  | 2n |  |
| PP3CE23008C0 |  | PA-P3 ; 2nd Fix, Inst of Equipment (FCU,FAN,PUMP) (Elec RM)_PC-1 | 30d | 2012-03-05 | 2012-04-09 | PP3CE26009C0 SS | 138.2d | 93d | MECHANICAL [2184 h]; Cost |  | CP2ME23022C0 | PP3CE23008C0 | PA | C | P3 | ER | ME | 230 | 08 | PC | S | BILL 2 | B02 | S2 | 2F | R00 | ACF04 | PC-1 | 230 |  |  | MEP |  | 2n | H |
| PP3CE26009C0 |  | PA-P3 ; 2nd Fix, Inst of Equipment (DB, TR, SG) (Elec RM)_PC-1 | 30d | 2012-03-05 | 2012-04-09 | PP3CE08109C0 | 138.2d | 0d | ELECTRICAL [1192.8 h]; Cost |  | CP2ME26024C0 | PP3CE26009C0 | PA | C | P3 | ER | ME | 260 | 09 | PC | S | BILL 2 | B02 | S2 | 2F | R00 | ACF04 | PC-1 | 260 |  |  | MEP |  | 2n | E |
| PP3CE23004C0 |  | PA-P3 ; 1st Fix, Inst of VCD's/FD's (Elec RM)_PC-1 | 30d | 2012-04-02 | 2012-05-07 | PP3CE23003C0 SS, PP3CE04001C0, PP3CE23003C0 | 77.2d | 0d | MECHANICAL [1168.8 h]; Cost |  | CP2ME23016C0 | PP3CE23004C0 | PA | C | P3 | ER | ME | 230 | 04 | PC | S | BILL 2 | B02 | S2 | 1F | R00 | ACF04 | PC-1 | 230 |  |  | MEP | M1F | 1S |  |
| PP3CE23009C0 |  | PA-P3 ; 2nd Fix, Inst of VCD's/FD's (Elec RM)_PC-1 | 30d | 2012-04-02 | 2012-05-07 | PP3CE23003C0 | 77.2d | 0d | MECHANICAL [1168.8 h]; Cost |  | CP2ME23024C0 | PP3CE23009C0 | PA | C | P3 | ER | ME | 230 | 09 | PC | S | BILL 2 | B02 | S2 | 2F | R00 | ACF07 | PC-1 | 230 |  |  | MEP |  | 2n |  |
| PP3CE26001C0 |  | PA-P3 ; 1st Fix, Inst of Trunking/Conduiting (Elec RM)_PC-1 | 30d | 2012-04-02 | 2012-05-07 | PP3CE23001C0, PP3CE04001C0, PP3CE23003C0 | 71.2d | 0d | ELECTRICAL [192 h]; Cost |  | CP2ME26010C0 | PP3CE26001C0 | PA | C | P3 | ER | ME | 260 | 01 | PC | S | BILL 2 | B02 | S2 | 1F | R00 | ACF04 | PC-1 | 260 |  |  | MEP | M1F | 1S |  |
| PP3CE26002C0 |  | PA-P3 ; 1st Fix, Inst of Cable Tray (Elec RM)_PC-1 | 30d | 2012-04-02 | 2012-05-07 | PP3CE26001C0 SS, PP3CE04001C0, PP3CE23003C0 | 71.2d | 0d | ELECTRICAL [63.6 h]; Cost |  | CP2ME26012C0 | PP3CE26002C0 | PA | C | P3 | ER | ME | 260 | 02 | PC | S | BILL 2 | B02 | S2 | 1F | R00 | ACF04 | PC-1 | 260 |  |  | MEP | M1F | 1S |  |
| PP3CE27002C0 |  | PA-P3 ; 1st Fix, Inst of Trunking for ELV system (Elec RM)_PC-1 | 30d | 2012-04-02 | 2012-05-07 | PP3CE26002C0 SS, PP3CE04001C0, PP3CE23003C0 | 71.2d | 0d | ELECTRICAL [597.6 h]; Cost |  | CP2ME27010C0 | PP3CE27002C0 | PA | C | P3 | ER | ME | 270 | 02 | PC | S | BILL 2 | B02 | S2 | 1F | R00 | ACF04 | PC-1 | 270 |  |  | MEP | M1F | 1S |  |
| PP3CE09501C0 |  | PA-P3 ; Ceiling Grid and Service Tile (Elec RM)_PC-1 | 24d | 2012-05-07 | 2012-06-04 | PP3CE23002C0, PP3CE23003C0, PP3CE23004C0, PP3CE23007C0, PP3CE23009C0, PP3CE23010C0, PP3CE26001C0, PP3CE26002C0 | 77.2d | 0d | CEILING GRID FOR GYPSUM [3896 h]; CEILING GRID FOR GYPSUM [333.17 m2]; Cost | 1408 | CP2ME09501C0 | PP3CE09501C0 | PA | C | P3 | ER | CE | 095 | 01 | PC | S | BILL 2 | B02 | S2 | 01 | R00 | ACF06 | PC-1 | 095 | 323 |  |  |  |  |  |
| PP3CE26007C0 |  | PA-P3 ; 2nd Fix, Wiring for Power/Lighting/Emergency (Elec RM)_PC-1 | 30d | 2012-05-07 | 2012-06-11 | PP3CE26001C0 | 71.2d | 42d | ELECTRICAL [76.8 h]; Cost |  | CP2ME26020C0 | PP3CE26007C0 | PA | C | P3 | ER | ME | 260 | 07 | PC | S | BILL 2 | B02 | S2 | 2F | R00 | ACF07 | PC-1 | 260 |  |  | MEP |  | 2n |  |
| PP3CE26008C0 |  | PA-P3 ; 2nd Fix, Cable Pulling (Elec RM)_PC-1 | 30d | 2012-05-07 | 2012-06-11 | PP3CE26002C0 | 71.2d | 42d | ELECTRICAL [4096.8 h]; Cost |  | CP2ME26022C0 | PP3CE26008C0 | PA | C | P3 | ER | ME | 260 | 08 | PC | S | BILL 2 | B02 | S2 | 2F | R00 | ACF07 | PC-1 | 260 |  |  | MEP |  | 2n |  |
| PP3CE27001C0 |  | PA-P3 ; 1st Fix, Wiring/ Cabling work (Elec RM)_PC-1 | 30d | 2012-05-07 | 2012-06-11 | PP3CE04001C0, PP3CE27002C0 | 71.2d | 42d | ELECTRICAL [76.8 h]; Cost |  | CP2ME27012C0 | PP3CE27001C0 | PA | C | P3 | ER | ME | 270 | 01 | PC | S | BILL 2 | B02 | S2 | 1F | R00 | ACF04 | PC-1 | 270 |  |  | MEP | M1F | 1S |  |
| PP3CE21104C0 |  | PA-P3 ; 2nd Fix, Inst of Sprinkler droppers (Elec RM)_PC-1 | 30d | 2012-06-04 | 2012-07-10 | PP3CE09501C0 | 211.2d | 143.12d | MECHANICAL [3199.2 h]; Cost |  | CP2ME21120C0 | PP3CE21104C0 | PA | C | P3 | ER | ME | 211 | 04 | PC | S | BILL 2 | B02 | S2 | 2F | R00 | ACF07 | PC-1 | 211 |  |  | MEP |  | 2n |  |
| PP3CE21105C0 |  | PA-P3 ; 2nd Fix, Inst of Zone Control Valve (Elec RM)_PC-1 | 30d | 2012-06-04 | 2012-07-10 | PP3CE09501C0 | 211.2d | 143.12d | MECHANICAL [735.6 h]; Cost |  | CP2ME21124C0 | PP3CE21105C0 | PA | C | P3 | ER | ME | 211 | 05 | PC | S | BILL 2 | B02 | S2 | 2F | R00 | ACF07 | PC-1 | 211 |  |  | MEP |  | 2n |  |
| PP3CE27005C0 |  | PA-P3 ; 2nd Fix, Wiring Droppers (Elec RM)_PC-1 | 30d | 2012-06-04 | 2012-07-10 | PP3CE09501C0 | 211.2d | 143.12d | ELECTRICAL [76.8 h]; Cost |  | CP2ME27022C0 | PP3CE27005C0 | PA | C | P3 | ER | ME | 270 | 05 | PC | S | BILL 2 | B02 | S2 | 2F | R00 | ACF07 | PC-1 | 270 |  |  | MEP |  | 2n |  |
| PP3CE27006C0 |  | PA-P3 ; 2nd Fix, Inst of ELV Equipment (Panels) (Elec RM)_PC-1 | 30d | 2012-06-04 | 2012-07-10 | PP3CE09501C0 | 211.2d | 143.12d | ELECTRICAL [183.6 h]; Cost |  | CP2ME27020C0 | PP3CE27006C0 | PA | C | P3 | ER | ME | 270 | 06 | PC | S | BILL 2 | B02 | S2 | 2F | R00 | ACF04 | PC-1 | 270 |  |  | MEP |  | 2n | E |
| PP3CE05501C0 |  | PA-P3 ; Handrails & balustrade (Elec RM)_PC-1 | 20d | 2012-07-28 | 2012-08-22 | PP3CE09902C0, PGLS703391C10, PGLS603391C10, PP1S103331C320, PP1S103331C310 | 45.2d | 37d | SECONDARY STEEL [338 h]; Cost |  | CP2ME05501C0 | PP3CE05501C0 | PA | C | P3 | ER | SW | 055 | 01 | PC | S | BILL 2 | B02 | S2 | 01 | R00 | ACF03 | PC-1 | a |  |  |  |  |  |  |
| PP3CE08103C0 |  | PA-P3 ; Metal Doors (Elec RM)_PC-1 | 15.75d | 2012-07-28 | 2012-08-15 | PP3CE08102C0, PGLS703391C10, PGLS603391C10, PP1S103331C320, PP1S103331C310 | 49.45d | 2d | METAL DOORS [50 h]; METAL DOORS [5 no]; Cost | 1375 | CP2ME08105C0 | PP3CE08103C0 | PA | C | P3 | ER | DO | 081 | 03 | PC | S | BILL 2 | B02 | S2 | DR | R00 | ACF06 | PC-1 | 081 | 317 | 08 |  |  |  |  |
| PP3CE08701C0 |  | PA-P3 ; Ironmongery (Elec RM)_PC-1 | 17.75d | 2012-07-28 | 2012-08-18 | PP3CE08103C0 FF, PGLS703391C10, PGLS603391C10, PP1S103331C320, PP1S103331C310 | 47.45d | 39.25d | IRONMONGERY [50 h]; IRONMONGERY [5 no]; Cost | 6230 | CP2ME08709C0 | PP3CE08701C0 | PA | C | P3 | ER | DO | 087 | 01 | PC | S | BILL 2 | B02 | S2 | IM | R00 | ACF06 | PC-1 | 087 | 322 | 08 |  |  |  |  |
| PP3CE09203C0 |  | PA-P3 ; Partitions Closing (Elec RM)_PC-1 | 20d | 2012-07-28 | 2012-08-22 | PAFOA09201C1 FF, PP3CE09202C0, PP3CE08102C0 FF, PGLS703391C10, PGLS603391C10, PP1S103331C320, PP1S103331C310 | 45.2d | 37d | PARTITIONS [4 m]; PARTITIONS [36 h]; Cost | 1540 | CP2ME09205C0 | PP3CE09203C0 | PA | C | P3 | ER | PT | 092 | 03 | PC | S | BILL 2 | B02 | S2 | FF | R00 | ACF06 | PC-1 | 092 |  |  | GP | P2F |  |  |
| PP3CE09601C0 |  | PA-P3 ; Flooring (Elec RM)_PC-1 | 20d | 2012-07-28 | 2012-08-22 | PP3CE09902C0, PP3CE09903C0, PP3CE23008C0, PGLS703391C10, PGLS603391C10, PP1S103331C320, PP1S103331C310 | 45.2d | 0d | ASSORTED FLOOR FINISH [2616 h]; ASSORTED FLOOR FINISH [1452 m2]; Cost | 1377 | CP2ME09601C0 | PP3CE09601C0 | PA | C | P3 | ER | FF | 096 | 01 | PC | S | BILL 2 | B02 | S2 | 01 | R00 | ACF06 | PC-1 | FF | 326 |  |  |  |  |  |
| PP3CE09901C0 |  | PA-P3 ; Wall - final Paint (Elec RM)_PC-1 | 18d | 2012-07-28 | 2012-08-18 | PP3CE09902C0, PGLS703391C10, PGLS603391C10, PP1S103331C320, PP1S103331C310 | 47.2d | 39d | WALL PAINT [327 h]; WALL PAINT [408 m2]; Cost | 1379 | CP2ME09903C0 | PP3CE09901C0 | PA | C | P3 | ER | PA | 099 | 01 | PC | S | BILL 2 | B02 | S2 | 02 | R00 | ACF06 | PC-1 | 099 | 329 |  |  |  |  |  |
| PP3CE09904C0 |  | PA-P3 ; Ceiling - final Paint (Elec RM)_PC-1 | 9d | 2012-07-28 | 2012-08-07 | PP3CE09903C0, PGLS703391C10, PGLS603391C10, PP1S103331C320, PP1S103331C310 | 56.2d | 48d | ASSORTED CEILING FINISH [4 h]; Cost | 1546 | CP2ME09907C0 | PP3CE09904C0 | PA | C | P3 | ER | PA | 099 | 04 | PC | S | BILL 2 | B02 | S2 | 02 | R00 | ACF06 | PC-1 | 099 |  |  |  |  |  |  |
| PP3CE21101C0 |  | PA-P3 ; Final Fix, Gaseous Fire Suppression Electrical Room (Elec RM)_PC-1 | 18d | 2012-07-28 | 2012-08-18 | PP3CE09502C0 FF, PGLS703391C10, PGLS603391C10, PP1S103331C320, PP1S103331C310 | 47.2d | 39d | MECHANICAL [697.2 h]; Cost |  | CP2ME21109C0 | PP3CE21101C0 | PA | C | P3 | ER | ME | 211 | 01 | PC | S | BILL 2 | B02 | S2 | FF | R00 | ACF07 | PC-1 | 211 |  |  | MEP |  | FF |  |
| PP3CE21102C0 |  | PA-P3 ; Final Fix, Gaseous Fire Suppression Transformer room (Elec RM)_PC-1 | 18d | 2012-07-28 | 2012-08-18 | PP3CE09502C0 FF, PGLS703391C10, PGLS603391C10, PP1S103331C320, PP1S103331C310 | 47.2d | 39d | MECHANICAL [697.2 h]; Cost |  | CP2ME21111C0 | PP3CE21102C0 | PA | C | P3 | ER | ME | 211 | 02 | PC | S | BILL 2 | B02 | S2 | FF | R00 | ACF07 | PC-1 | 211 |  |  | MEP |  | FF |  |
| PP3CE21103C0 |  | PA-P3 ; Final Fix, Gaseous Fire Suppression Telecom Room (Elec RM)_PC-1 | 18d | 2012-07-28 | 2012-08-18 | PP3CE09502C0 FF, PGLS703391C10, PGLS603391C10, PP1S103331C320, PP1S103331C310 | 47.2d | 39d | MECHANICAL [697.2 h]; Cost |  | CP2ME21113C0 | PP3CE21103C0 | PA | C | P3 | ER | ME | 211 | 03 | PC | S | BILL 2 | B02 | S2 | FF | R00 | ACF07 | PC-1 | 211 |  |  | MEP |  | FF |  |
| PP3CE23006C0 |  | PA-P3 ; Final Fix, Inst of Flexible Duct & Plenum boxes (Elec RM)_PC-1 | 18d | 2012-07-28 | 2012-08-18 | PP3CE09501C0 SS, PGLS703391C10, PGLS603391C10, PP1S103331C320, PP1S103331C310 | 29.2d | 0d | MECHANICAL [33.6 h]; Cost |  | CP2ME23032C0 | PP3CE23006C0 | PA | C | P3 | ER | ME | 230 | 06 | PC | S | BILL 2 | B02 | S2 | FF | R00 | ACF07 | PC-1 | 230 |  |  | MEP |  | FF |  |
| PP3CE26004C0 |  | PA-P3 ; Final Fix, Inst of Ceiling rose (Elec RM)_PC-1 | 18d | 2012-07-28 | 2012-08-18 | PP3CE09501C0, PGLS703391C10, PGLS603391C10, PP1S103331C320, PP1S103331C310 | 47.2d | 39d | ELECTRICAL [25.2 h]; Cost |  | CP2ME26032C0 | PP3CE26004C0 | PA | C | P3 | ER | ME | 260 | 04 | PC | S | BILL 2 | B02 | S2 | FF | R00 | ACF07 | PC-1 | 260 |  |  | MEP |  | FF |  |
| PP3CE27003C0 |  | PA-P3 ; Final Fix, BMS connection work to Equipment (Elec RM)_PC-1 | 18d | 2012-07-28 | 2012-08-18 | PP3CE26009C0, PGLS703391C10, PGLS603391C10, PP1S103331C320, PP1S103331C310 | 47.2d | 39d | ELECTRICAL [2335.2 h]; Cost |  | CP2ME27032C0 | PP3CE27003C0 | PA | C | P3 | ER | ME | 270 | 03 | PC | S | BILL 2 | B02 | S2 | FF | R00 | ACF07 | PC-1 | 270 |  |  | MEP |  | FF |  |
| PP3CE22001C0 |  | PA-P3 ; Final Fix, Inst of All drain (Elec RM)_PC-1 | 18d | 2012-07-30 | 2012-08-22 | PP3CE09601C0 FF, PGLS703391C10, PGLS603391C10, PP1S103331C320, PP1S103331C310 | 45.2d | 37d | PLUMBING [2156.4 h]; Cost |  | CP2ME22037C0 | PP3CE22001C0 | PA | C | P3 | ER | ME | 220 | 01 | PC | S | BILL 2 | B02 | S2 | FF | R00 | ACF07 | PC-1 | 220 |  |  | MEP |  | FF |  |
| PP3CE09502C0 |  | PA-P3 ; Ceiling closure (Elec RM)_PC-1 | 15d | 2012-07-31 | 2012-08-18 | PP3CE09501C0, PP3CE23006C0 FF, PP3CE26007C0, PP3CE26008C0, PP3CE27001C0, PGLS703391C10, PGLS603391C10, PP1S103331C320, PP1S103331C310 | 29.2d | 0d | ASSORTED CEILING FINISH [220.17 h]; CEILING GYPSUM [109.27 h]; ASSORTED CEILING FINISH [358 m2]; CEILING GYPSUM [333 m2]; Cost | 1409 | CP2ME09503C0 | PP3CE09502C0 | PA | C | P3 | ER | CE | 095 | 02 | PC | S | BILL 2 | B02 | S2 | 02 | R00 | ACF06 | PC-1 | 095 | 324 |  |  |  |  |  |
| PP3CE26003C0 |  | PA-P3 ; Final Fix, Termination & Gladding of Cables (Elec RM)_PC-1 | 18d | 2012-08-05 | 2012-08-28 | PP3CE09502C0 FF+7d, PGLS703391C10, PGLS603391C10, PP1S103331C320, PP1S103331C310 | 40.2d | 32d | ELECTRICAL [512.4 h]; Cost |  | CP2ME26030C0 | PP3CE26003C0 | PA | C | P3 | ER | ME | 260 | 03 | PC | S | BILL 2 | B02 | S2 | FF | R00 | ACF07 | PC-1 | 260 |  |  | MEP |  | FF |  |
| PP3CE26005C0 |  | PA-P3 ; Final Fix, Inst of Switch/Sockets (Elec RM)_PC-1 | 18d | 2012-08-05 | 2012-08-28 | PP3CE09502C0 FF+7d, PGLS703391C10, PGLS603391C10, PP1S103331C320, PP1S103331C310 | 40.2d | 32d | ELECTRICAL [124.8 h]; Cost |  | CP2ME26034C0 | PP3CE26005C0 | PA | C | P3 | ER | ME | 260 | 05 | PC | S | BILL 2 | B02 | S2 | FF | R00 | ACF07 | PC-1 | 260 |  |  | MEP |  | FF |  |
| PP3CE26006C0 |  | PA-P3 ; Final Fix, Inst of Light fittings (Elec RM)_PC-1 | 18d | 2012-08-05 | 2012-08-28 | PP3CE09502C0 FF+7d, PGLS703391C10, PGLS603391C10, PP1S103331C320, PP1S103331C310 | 40.2d | 32d | ELECTRICAL [3124.8 h]; Cost |  | CP2ME26039C0 | PP3CE26006C0 | PA | C | P3 | ER | ME | 260 | 06 | PC | S | BILL 2 | B02 | S2 | FF | R00 | ACF07 | PC-1 | 260 |  |  | MEP |  | FF |  |
| PP3CE23005C0 |  | PA-P3 ; Final Fix, Inst of Grilles & Diffusers (Elec RM)_PC-1 | 18d | 2012-08-18 | 2012-09-10 | PP3CE09502C0, PGLS703391C10, PGLS603391C10, PP1S103331C320, PP1S103331C310 | 29.2d | 21d | MECHANICAL [495.6 h]; Cost |  | CP2ME23030C0 | PP3CE23005C0 | PA | C | P3 | ER | ME | 230 | 05 | PC | S | BILL 2 | B02 | S2 | FF | R00 | ACF07 | PC-1 | 230 |  |  | MEP |  | FF |  |
| PP3CE27004C0 |  | PA-P3 ; Final Fix, Inst of ELV device (Detector/Speaker) (Elec RM)_PC-1 | 18d | 2012-08-18 | 2012-09-10 | PP3CE09502C0, PGLS703391C10, PGLS603391C10, PP1S103331C320, PP1S103331C310 | 29.2d | 21d | ELECTRICAL [78 h]; Cost |  | CP2ME27030C0 | PP3CE27004C0 | PA | C | P3 | ER | ME | 270 | 04 | PC | S | BILL 2 | B02 | S2 | FF | R00 | ACF07 | PC-1 | 270 |  |  | MEP |  | FF |  |

| ID | WBS | Activity | Duration | Start | Finish | Predecessors | Total float | Free float | Resources | Change Order # | NEW ACTIVITY ID | change id | IDDD | CCAD BUILDING(SET) | CCAD PHASE(SET) | CCAD FLOOR(SET) | CCAD ZONE(SET) | CCAD WORK(SET) | CCAD SECTION(SET) | CCAD SERIAL No.(SET) | CCAD Carpark code(SET) | CCAD Carpark district code(set) | CCAD CBS(SET) | CCAD BILL(SET) | CCAD HANDOVER(SET) | CCAD TAG(SET) | CCAD REV(SET) | CCADACF (SET) | FSP CODE | CCAD SSCF | CCAD SUB ZONE MEP(SET) | CCAD CSA | Act Selector % | CCAD MEQ | CCAD DIVISION(SET) |
| --- | --- | --- | --- | --- | --- | --- | --- | --- | --- | --- | --- | --- | --- | --- | --- | --- | --- | --- | --- | --- | --- | --- | --- | --- | --- | --- | --- | --- | --- | --- | --- | --- | --- | --- | --- |
|  | CM1 | **MECHANICAL ROOMS (2 NOS.) ; Zone PC-1** |  | 2011-12-17 | 2012-09-13 |  |  |  |  |  |  |  |  |  |  |  |  |  |  |  |  |  |  |  |  |  |  |  |  |  |  |  |  |  |  |
| PP3CM09902C0 |  | PA-P3 ; Wall Prime & 1st coat (Mech RM)_PC-1 | 18d | 2011-12-17 | 2012-01-08 | PGLS603391C0, PGLS703391C0 | 8.2d | 0d | WALL PAINT [608 h]; WALL PAINT [758 m2]; Cost | 328 | 1469 | C04ME09901C0 | PP3CM09902C0 | PA | C | P3 | M1 | PA | 099 | 02 | PC | S | BILL 2 | B02 | S2 | 01 | R00 | ACF06 | PC-1 | 099 |  |  |  |  |  |
| PP3CM04001C0 |  | PA-P3 ; Block Wall Works (Mech RM)_PC-1 | 30d | 2012-01-08 | 2012-02-13 | PP3CM09902C0 | 26.2d | 0d | BLOCKWORKS [644 h]; BLOCKWORKS [184 m2]; Cost |  |  | AP3M104001C0 | PP3CM04001C0 | PA | C | P3 | M1 | BL | 040 | 01 | PC | S | BILL 2 | B02 | S2 | BL | R00 | ACF06 | PC-1 | 040 |  |  |  |  |  |
| PP3CM23003C0 |  | PA-P3 ; 1st Fix, Inst. of Supports for MEP (Mech RM)_PC-1 | 12d | 2012-02-13 | 2012-02-27 | PP3CM04001C0 | 26.2d | 0d | MECHANICAL [883.2 h]; Cost |  |  | C04ME23001C0 | PP3CM23003C0 | PA | C | P3 | M1 | ME | 230 | 03 | PC | S | BILL 2 | B02 | S2 | 1F | R00 | ACF04 | PC-1 | 230 | 1S | MEP | M1F |  |  |
| PP3CM21102C0 |  | PA-P3 ; 1st Fix, Inst of Sprinkler main pipe (Mech RM)_PC-1 | 30d | 2012-02-27 | 2012-04-02 | PP3CM23003C0, PP3CM04001C0 | 26.2d | 0d | MECHANICAL [9823.2 h]; Cost |  |  | C04ME21111C0 | PP3CM21102C0 | PA | C | P3 | M1 | ME | 211 | 02 | PC | S | BILL 2 | B02 | S2 | 1F | R00 | ACF04 | PC-1 | 211 | 1S | MEP | M1F |  |  |
| PP3CM23001C0 |  | PA-P3 ; 1st Fix, Inst of CHW pipe (Mech RM)_PC-1 | 30d | 2012-02-27 | 2012-04-02 | PP3CM21102C0 SS, PP3CM23003C0, PP3CM04001C0 | 98.2d | 30d | MECHANICAL [3097.2 h]; Cost |  |  | C04ME23019C0 | PP3CM23001C0 | PA | C | P3 | M1 | ME | 230 | 01 | PC | S | BILL 2 | B02 | S2 | 1F | R00 | ACF04 | PC-1 | 230 | 1S | MEP | M1F |  |  |
| PP3CM21101C0 |  | PA-P3 ; 1st Fix, Inst of Sprinkler branch pipe (Mech RM)_PC-1 | 30d | 2012-04-02 | 2012-05-07 | PP3CM21102C0 SS, PP3CM04001C0, PP3CM21102C0 | 86.2d | 0d | MECHANICAL [8076 h]; Cost |  |  | C04ME21119C0 | PP3CM21101C0 | PA | C | P3 | M1 | ME | 211 | 01 | PC | S | BILL 2 | B02 | S2 | 1F | R00 | ACF04 | PC-1 | 211 | 1S | MEP | M1F |  |  |
| PP3CM23002C0 |  | PA-P3 ; 1st Fix, Inst of Ducting (Mech RM)_PC-1 | 30d | 2012-04-02 | 2012-05-07 | PP3CM23003C0, PP3CM04001C0, PP3CM21102C0 | 26.2d | 0d | MECHANICAL [3948 h]; Cost |  |  | C04ME23005C0 | PP3CM23002C0 | PA | C | P3 | M1 | ME | 230 | 02 | PC | S | BILL 2 | B02 | S2 | 1F | R00 | ACF04 | PC-1 | 230 | 1S | MEP | M1F |  |  |
| PP3CM21104C0 |  | PA-P3 ; 2nd Fix, Inst of Sprinkler droppers (Mech RM)_PC-1 | 30d | 2012-05-07 | 2012-06-11 | PP3CM21101C0 | 86.2d | 39d | MECHANICAL [3387.6 h]; Cost |  |  | C04ME21115C0 | PP3CM21104C0 | PA | C | P3 | M1 | ME | 211 | 04 | PC | S | BILL 2 | B02 | S2 | 2F | R00 | ACF07 | PC-1 | 211 | 2n | MEP |  |  |  |
| PP3CM22001C0 |  | PA-P3 ; 1st Fix, Inst of Drainage pipe (Mech RM)_PC-1 | 30d | 2012-05-07 | 2012-06-11 | PP3CM23003C0, PP3CM26002C0 SS, PP3CM04001C0 | 26.2d | 0d | PLUMBING [2156.4 h]; Cost |  |  | C04ME22011C0 | PP3CM22001C0 | PA | C | P3 | M1 | ME | 220 | 01 | PC | S | BILL 2 | B02 | S2 | 1F | R00 | ACF04 | PC-1 | 220 | 1S | MEP | M1F |  |  |
| PP3CM22003C0 |  | PA-P3 ; 1st Fix, Inst of Water supply pipe (Mech RM)_PC-1 | 30d | 2012-05-07 | 2012-06-11 | PP3CM22001C0 SS, PP3CM23003C0, PP3CM04001C0 | 26.2d | 0d | PLUMBING [6082.8 h]; Cost |  |  | C04ME22006C0 | PP3CM22003C0 | PA | C | P3 | M1 | ME | 220 | 03 | PC | S | BILL 2 | B02 | S2 | 1F | R00 | ACF04 | PC-1 | 220 | 1S | MEP | M1F |  |  |
| PP3CM23004C0 |  | PA-P3 ; 2nd Fix, Inst of Equipment (AHU) (Mech RM)_PC-1 | 30d | 2012-05-07 | 2012-06-11 | PP3CM04001C0, PP3CM22001C0 FF, PP3CM22003C0 FF | 26.2d | 0d | MECHANICAL [528 h]; Cost |  |  | C04ME23013C0 | PP3CM23004C0 | PA | C | P3 | M1 | ME | 230 | 04 | PC | S | BILL 2 | B02 | S2 | 2F | R00 | ACF04 | PC-1 | 230 | 2n | MEP |  | H |  |
| PP3CM23007C0 |  | PA-P3 ; 2nd Fix, Inst of VCD's/FD's (Mech RM)_PC-1 | 30d | 2012-05-07 | 2012-06-11 | PP3CM23002C0 | 68.2d | 39d | MECHANICAL [1168.8 h]; Cost |  |  | C04ME23015C0 | PP3CM23007C0 | PA | C | P3 | M1 | ME | 230 | 07 | PC | S | BILL 2 | B02 | S2 | 2F | R00 | ACF07 | PC-1 | 230 | 2n | MEP |  |  |  |
| PP3CM23008C0 |  | PA-P3 ; 2nd Fix, Insulation of CHW pipe & Duct (Mech RM)_PC-1 | 30d | 2012-05-07 | 2012-06-11 | PP3CM23001C0, PP3CM23002C0 | 68.2d | 39d | MECHANICAL [3702 h]; Cost |  |  | C04ME23017C0 | PP3CM23008C0 | PA | C | P3 | M1 | ME | 230 | 08 | PC | S | BILL 2 | B02 | S2 | 2F | R00 | ACF07 | PC-1 | 230 | 2n | MEP |  |  |  |
| PP3CM26001C0 |  | PA-P3 ; 1st Fix, Inst of Cable Tray (Mech RM)_PC-1 | 30d | 2012-05-07 | 2012-06-11 | PP3CM04001C0, PP3CM23002C0 | 26.2d | 0d | ELECTRICAL [63.6 h]; Cost |  |  | C04ME26011C0 | PP3CM26001C0 | PA | C | P3 | M1 | ME | 260 | 01 | PC | S | BILL 2 | B02 | S2 | 1F | R00 | ACF04 | PC-1 | 260 | 1S | MEP | M1F |  |  |
| PP3CM26002C0 |  | PA-P3 ; 1st Fix, Inst of Trunking/Conduiting (Mech RM)_PC-1 | 30d | 2012-05-07 | 2012-06-11 | PP3CM23003C0, PP3CM04001C0, PP3CM23002C0 | 26.2d | 0d | ELECTRICAL [192 h]; Cost |  |  | C04ME26001C0 | PP3CM26002C0 | PA | C | P3 | M1 | ME | 260 | 02 | PC | S | BILL 2 | B02 | S2 | 1F | R00 | ACF04 | PC-1 | 260 | 1S | MEP | M1F |  |  |
| PP3CM27001C0 |  | PA-P3 ; 1st Fix, Inst of Trunking for ELV system (Mech RM)_PC-1 | 30d | 2012-05-07 | 2012-06-11 | PP3CM23002C0 SS, PP3CM04001C0, PP3CM23002C0 | 26.2d | 0d | ELECTRICAL [535.2 h]; Cost |  |  | C04ME27010C0 | PP3CM27001C0 | PA | C | P3 | M1 | ME | 270 | 01 | PC | S | BILL 2 | B02 | S2 | 1F | R00 | ACF04 | PC-1 | 270 | 1S | MEP | M1F |  |  |
| PP3CM09201C0 |  | PA-P3 ; Metal Studs (Mech RM)_PC-1 | 10d | 2012-06-11 | 2012-06-24 | PP3CM04001C0 SS+30d, PP3CM23004C0 | 47.2d | 0d | PARTITIONS [29 h]; PARTITIONS [4 m]; Cost |  |  | C04ME09201C0 | PP3CM09201C0 | PA | C | P3 | M1 | PT | 092 | 01 | PC | S | BILL 2 | B02 | S2 | 1F | R00 | ACF06 | PC-1 | 092 |  | GP | PMS |  |  |
| PP3CM21105C0 |  | PA-P3 ; 2nd Fix, Inst of Zone Control Valve (Mech RM)_PC-1 | 30d | 2012-06-11 | 2012-07-17 | PP3CM23001C0, PP3CM23004C0 | 56.2d | 9d | MECHANICAL [735.6 h]; Cost |  |  | C04ME21117C0 | PP3CM21105C0 | PA | C | P3 | M1 | ME | 211 | 05 | PC | S | BILL 2 | B02 | S2 | 2F | R00 | ACF07 | PC-1 | 211 | 2n | MEP |  |  |  |
| PP3CM23005C0 |  | PA-P3 ; 2nd Fix, Inst of Equipment (FCU,FAN,PUMP) (Mech RM)_PC-1 | 30d | 2012-06-11 | 2012-07-17 | PP3CM23004C0 | 26.2d | 0d | MECHANICAL [2184 h]; Cost |  |  | C04ME23011C0 | PP3CM23005C0 | PA | C | P3 | M1 | ME | 230 | 05 | PC | S | BILL 2 | B02 | S2 | 2F | R00 | ACF04 | PC-1 | 230 | 2n | MEP |  | H |  |
| PP3CM26003C0 |  | PA-P3 ; 2nd Fix, Cable Pulling (Mech RM)_PC-1 | 30d | 2012-06-11 | 2012-07-17 | PP3CM26001C0 | 26.2d | 0d | ELECTRICAL [4096.8 h]; Cost |  |  | C04ME26007C0 | PP3CM26003C0 | PA | C | P3 | M1 | ME | 260 | 03 | PC | S | BILL 2 | B02 | S2 | 2F | R00 | ACF07 | PC-1 | 260 | 2n | MEP |  |  |  |
| PP3CM26004C0 |  | PA-P3 ; 2nd Fix, Inst of Equipment (DB, TR, SG) (Mech RM)_PC-1 | 30d | 2012-06-11 | 2012-07-17 | PP3CM23004C0 | 56.2d | 9d | ELECTRICAL [1192.8 h]; Cost |  |  | C04ME26009C0 | PP3CM26004C0 | PA | C | P3 | M1 | ME | 260 | 04 | PC | S | BILL 2 | B02 | S2 | 2F | R00 | ACF04 | PC-1 | 260 | 2n | MEP |  | E |  |
| PP3CM27002C0 |  | PA-P3 ; 1st Fix, Wiring/ Cabling work (Mech RM)_PC-1 | 30d | 2012-06-11 | 2012-07-17 | PP3CM26001C0 SS, PP3CM26002C0 SS, PP3CM04001C0, PP3CM27001C0 | 26.2d | 0d | ELECTRICAL [76.8 h]; Cost |  |  | C04ME27001C0 | PP3CM27002C0 | PA | C | P3 | M1 | ME | 270 | 02 | PC | S | BILL 2 | B02 | S2 | 1F | R00 | ACF04 | PC-1 | 270 | 1S | MEP | M1F |  |  |
| PP3CM27003C0 |  | PA-P3 ; 2nd Fix, Inst of ELV Equipment (Panels) (Mech RM)_PC-1 | 30d | 2012-06-11 | 2012-07-17 | PP3CM23004C0 | 56.2d | 9d | ELECTRICAL [183.6 h]; Cost |  |  | C04ME27020C0 | PP3CM27003C0 | PA | C | P3 | M1 | ME | 270 | 03 | PC | S | BILL 2 | B02 | S2 | 2F | R00 | ACF04 | PC-1 | 270 | 2n | MEP |  | E |  |
| PP3CM08102C0 |  | PA-P3 ; Metal Door Frames (Mech RM)_PC-1 | 12d | 2012-06-24 | 2012-07-08 | PP3CM09201C0, GNHE08101C0 | 60.2d | 17d | METAL DOORS [58 h]; Cost | 316 | 1465 | C04ME08101C0 | PP3CM08102C0 | PA | C | P3 | M1 | DO | 081 | 02 | PC | S | BILL 2 | B02 | S2 | DF | R00 | ACF06 | PC-1 | 081 |  |  |  |  | 08 |
| PP3CM09202C0 |  | PA-P3 ; Partitions 1st face (Mech RM)_PC-1 | 18d | 2012-06-26 | 2012-07-17 | PP3CM09201C0 SS+12d | 47.2d | 9d | PARTITIONS [4 m]; PARTITIONS [32 h]; Cost | 314 | 1463 | C04ME09203C0 | PP3CM09202C0 | PA | C | P3 | M1 | PT | 092 | 02 | PC | S | BILL 2 | B02 | S2 | 2F | R00 | ACF06 | PC-1 | 092 |  | GP | P1F |  |  |
| PP3CM23006C0 |  | PA-P3 ; 2nd Fix, Inst of VAV'S CHW connection (Mech RM)_PC-1 | 30d | 2012-07-17 | 2012-08-23 | PP3CM23005C0 | 26.2d | 0d | MECHANICAL [50.4 h]; Cost |  |  | C04ME23009C0 | PP3CM23006C0 | PA | C | P3 | M1 | ME | 230 | 06 | PC | S | BILL 2 | B02 | S2 | 2F | R00 | ACF07 | PC-1 | 230 | 2n | MEP |  |  |  |
| PP3CM26005C0 |  | PA-P3 ; 2nd Fix, Wiring for Power/Lighting/Emergency (Mech RM)_PC-1 | 30d | 2012-07-17 | 2012-08-23 | PP3CM26001C0, PP3CM26002C0, PP3CM26003C0, PP3CM27001C0, PP3CM27002C0 | 26.2d | 0d | ELECTRICAL [76.8 h]; Cost |  |  | C04ME26005C0 | PP3CM26005C0 | PA | C | P3 | M1 | ME | 260 | 05 | PC | S | BILL 2 | B02 | S2 | 2F | R00 | ACF07 | PC-1 | 260 | 2n | MEP |  |  |  |
| PP3CM08103C0 |  | PA-P3 ; Metal Doors (Mech RM)_PC-1 | 12d | 2012-07-28 | 2012-08-11 | PP3CM08102C0, PGLS703391C10, PGLS603391C10, PP1S103331C320, PP1S103331C310 | 43.2d | 0d | METAL DOORS [50 h]; METAL DOORS [5 no]; Cost | 317 | 1466 | C04ME08105C0 | PP3CM08103C0 | PA | C | P3 | M1 | DO | 081 | 03 | PC | S | BILL 2 | B02 | S2 | DR | R00 | ACF06 | PC-1 | 081 |  |  |  |  | 08 |
| PP3CM09203C0 |  | PA-P3 ; Partitions Closing (Mech RM)_PC-1 | 27d | 2012-07-28 | 2012-08-30 | PAFOA09201C1 FF, PP3CM09202C0, PP3CM22001C0, PP3CM22003C0, PP3CM08102C0 FF, PGLS703391C10, PGLS603391C10, PP1S103331C320, PP1S103331C310 | 38.2d | 0d | PARTITIONS [4 m]; PARTITIONS [36 h]; Cost | 315 | 1464 | C04ME09205C0 | PP3CM09203C0 | PA | C | P3 | M1 | PT | 092 | 03 | PC | S | BILL 2 | B02 | S2 | FF | R00 | ACF06 | PC-1 | 092 |  | GP | P2F |  |  |
| PP3CM09901C0 |  | PA-P3 ; Wall - final Paint (Mech RM)_PC-1 | 12d | 2012-07-28 | 2012-08-11 | PP3CM09902C0, PGLS703391C10, PGLS603391C10, PP1S103331C320, PP1S103331C310 | 53.2d | 45d | WALL PAINT [327 h]; WALL PAINT [408 m2]; Cost | 329 | 1470 | C04ME09903C0 | PP3CM09901C0 | PA | C | P3 | M1 | PA | 099 | 01 | PC | S | BILL 2 | B02 | S2 | 02 | R00 | ACF06 | PC-1 | 099 |  |  |  |  |  |
| PP3CM21107C0 |  | PA-P3 ; Final Fix, Inst of Sprinklers head (Mech RM)_PC-1 | 18d | 2012-07-28 | 2012-08-18 | PP3CM21104C0, PGLS703391C10, PGLS603391C10, PP1S103331C320, PP1S103331C310 | 47.2d | 39d | MECHANICAL [1396.8 h]; Cost |  |  | C04ME21121C0 | PP3CM21107C0 | PA | C | P3 | M1 | ME | 211 | 07 | PC | S | BILL 2 | B02 | S2 | FF | R00 | ACF07 | PC-1 | 211 | FF | MEP |  |  |  |
| PP3CM23009C0 |  | PA-P3 ; Final Fix, Inst of Flexible Duct & Plenum boxes (Mech RM)_PC-1 | 18d | 2012-07-28 | 2012-08-18 | PP3CM23007C0, PP3CM23008C0, PGLS703391C10, PGLS603391C10, PP1S103331C320, PP1S103331C310 | 29.2d | 0d | MECHANICAL [33.6 h]; Cost |  |  | C04ME23023C0 | PP3CM23009C0 | PA | C | P3 | M1 | ME | 230 | 09 | PC | S | BILL 2 | B02 | S2 | FF | R00 | ACF07 | PC-1 | 230 | FF | MEP |  |  |  |
| PP3CM26007C0 |  | PA-P3 ; Final Fix, Inst of Light fittings (Mech RM)_PC-1 | 18d | 2012-07-28 | 2012-08-18 | PP3CM09902C0, PGLS703391C10, PGLS603391C10, PP1S103331C320, PP1S103331C310 | 47.2d | 39d | ELECTRICAL [3124.8 h]; Cost |  |  | C04ME26019C0 | PP3CM26007C0 | PA | C | P3 | M1 | ME | 260 | 07 | PC | S | BILL 2 | B02 | S2 | FF | R00 | ACF07 | PC-1 | 260 | FF | MEP |  |  |  |
| PP3CM26008C0 |  | PA-P3 ; Final Fix, Inst of Switch/Sockets (Mech RM)_PC-1 | 18d | 2012-07-28 | 2012-08-18 | PP3CM09902C0, PGLS703391C10, PGLS603391C10, PP1S103331C320, PP1S103331C310 | 47.2d | 39d | ELECTRICAL [124.8 h]; Cost |  |  | C04ME26017C0 | PP3CM26008C0 | PA | C | P3 | M1 | ME | 260 | 08 | PC | S | BILL 2 | B02 | S2 | FF | R00 | ACF07 | PC-1 | 260 | FF | MEP |  |  |  |
| PP3CM27004C0 |  | PA-P3 ; Final Fix, BMS connection work to Equipment (Mech RM)_PC-1 | 18d | 2012-07-28 | 2012-08-18 | PP3CM21105C0, PP3CM23004C0, PP3CM23005C0, PP3CM23007C0, PP3CM26004C0, PP3CM27002C0, PP3CM27003C0, PGLS703391C10, PGLS603391C10, PP1S103331C320, PP1S103331C310 | 47.2d | 39d | ELECTRICAL [2335.2 h]; Cost |  |  | C04ME27003C0 | PP3CM27004C0 | PA | C | P3 | M1 | ME | 270 | 04 | PC | S | BILL 2 | B02 | S2 | FF | R00 | ACF07 | PC-1 | 270 | FF | MEP |  |  |  |
| PP3CM09601C0 |  | PA-P3 ; Floor Finishes (Mech RM)_PC-1 | 20d | 2012-08-05 | 2012-08-30 | PP3CM09203C0 FF, PGLS703391C10, PGLS603391C10, PP1S103331C320, PP1S103331C310 | 38.2d | 0d | ASSORTED FLOOR FINISH [2616 h]; ASSORTED FLOOR FINISH [1452 m2]; Cost | 326 | 1501 | C04ME09601C0 | PP3CM09601C0 | PA | C | P3 | M1 | FF | 096 | 01 | PC | S | BILL 2 | B02 | S2 | 01 | R00 | ACF06 | PC-1 | FF |  |  |  |  |  |
| PP3CM21106C0 |  | PA-P3 ; Final Fix, Inst of Fire Extinguishers/FHC (Mech RM)_PC-1 | 18d | 2012-08-07 | 2012-08-30 | PP3CM09203C0 FF, PGLS703391C10, PGLS603391C10, PP1S103331C320, PP1S103331C310 | 38.2d | 30d | MECHANICAL [2016 h]; Cost |  |  | C04ME21123C0 | PP3CM21106C0 | PA | C | P3 | M1 | ME | 211 | 06 | PC | S | BILL 2 | B02 | S2 | FF | R00 | ACF07 | PC-1 | 211 | FF | MEP |  |  |  |
| PP3CM22004C0 |  | PA-P3 ; Final Fix, Inst of All drain (Mech RM)_PC-1 | 18d | 2012-08-07 | 2012-08-30 | PP3CM09601C0 FF, PGLS703391C10, PGLS603391C10, PP1S103331C320, PP1S103331C310 | 38.2d | 30d | PLUMBING [2156.4 h]; Cost |  |  | C04ME22003C0 | PP3CM22004C0 | PA | C | P3 | M1 | ME | 220 | 04 | PC | S | BILL 2 | B02 | S2 | FF | R00 | ACF07 | PC-1 | 220 | FF | MEP |  |  |  |
| PP3CM26006C0 |  | PA-P3 ; Final Fix, Inst of Ceiling rose (Mech RM)_PC-1 | 18d | 2012-08-07 | 2012-08-30 | PP3CM09203C0 FF, PGLS703391C10, PGLS603391C10, PP1S103331C320, PP1S103331C310 | 38.2d | 30d | ELECTRICAL [400.8 h]; Cost |  |  | C04ME26015C0 | PP3CM26006C0 | PA | C | P3 | M1 | ME | 260 | 06 | PC | S | BILL 2 | B02 | S2 | FF | R00 | ACF07 | PC-1 | 260 | FF | MEP |  |  |  |
| PP3CM08101C0 |  | PA-P3 ; Al / Glass doors (Mech RM)_PC-1 | 10d | 2012-08-11 | 2012-08-25 | PP3CM08103C0, PGLS703391C10, PGLS603391C10, PP1S103331C320, PP1S103331C310 | 43.2d | 0d | ASSORTED DOORS [90 h]; ASSORTED DOORS [9 no]; Cost |  |  | C04ME08109C0 | PP3CM08101C0 | PA | C | P3 | M1 | DO | 081 | 01 | PC | S | BILL 2 | B02 | S2 | 03 | R00 | ACF06 | PC-1 | 081 |  |  |  |  |  |
| PP3CM08701C0 |  | PA-P3 ; Ironmongery (Mech RM)_PC-1 | 10d | 2012-08-11 | 2012-08-25 | PP3CM08101C0 FF, PP3CM08103C0, PGLS703391C10, PGLS603391C10, PP1S103331C320, PP1S103331C310 | 43.2d | 35d | IRONMONGERY [50 h]; IRONMONGERY [5 no]; Cost | 322 | 1467 | C04ME08709C0 | PP3CM08701C0 | PA | C | P3 | M1 | DO | 087 | 01 | PC | S | BILL 2 | B02 | S2 | IM | R00 | ACF06 | PC-1 | 087 |  |  |  |  | 08 |
| PP3CM23010C0 |  | PA-P3 ; Final Fix, Inst of Grilles & Diffusers (Mech RM)_PC-1 | 18d | 2012-08-18 | 2012-09-10 | PP3CM23009C0, PGLS703391C10, PGLS603391C10, PP1S103331C320, PP1S103331C310 | 29.2d | 21d | MECHANICAL [495.6 h]; Cost |  |  | C04ME23021C0 | PP3CM23010C0 | PA | C | P3 | M1 | ME | 230 | 10 | PC | S | BILL 2 | B02 | S2 | FF | R00 | ACF07 | PC-1 | 230 | FF | MEP |  |  |  |
| PP3CM26009C0 |  | PA-P3 ; Final Fix, Termination & Gladding of Cables (Mech RM)_PC-1 | 18d | 2012-08-23 | 2012-09-13 | PP3CM09203C0 FF, PP3CM26005C0, PGLS703391C10, PGLS603391C10, PP1S103331C320, PP1S103331C310 | 26.2d | 18d | ELECTRICAL [512.4 h]; Cost |  |  | C04ME26013C0 | PP3CM26009C0 | PA | C | P3 | M1 | ME | 260 | 09 | PC | S | BILL 2 | B02 | S2 | FF | R00 | ACF07 | PC-1 | 260 | FF | MEP |  |  |  |
| PP3CM27005C0 |  | PA-P3 ; Final Fix, Inst of ELV device (Detector/Speaker) (Mech RM)_PC-1 | 18d | 2012-08-23 | 2012-09-13 | PP3CM09902C0, PP3CM23006C0, PP3CM27003C0, PGLS703391C10, PGLS603391C10, PP1S103331C320, PP1S103331C310 | 26.2d | 18d | ELECTRICAL [78 h]; Cost |  |  | C04ME27030C0 | PP3CM27005C0 | PA | C | P3 | M1 | ME | 270 | 05 | PC | S | BILL 2 | B02 | S2 | FF | R00 | ACF07 | PC-1 | 270 | FF | MEP |  |  |  |

| ID | WBS | Activity | Duration | Start | Finish | Predecessors | Total float | Free float | Resources | Change Order # | NEW ACTIVITY ID | change id | IDDD | CCAD BUILDING(SET) | CCAD PHASE(SET) | CCAD FLOOR(SET) | CCAD ZONE(SET) | CCAD WORK(SET) | CCAD SECTION(SET) | CCAD SERIAL No.(SET) | CCAD Carpark code(SET) | CCAD Carpark district code(set) | CCAD CBS(SET) | CCAD BILL(SET) | CCAD HANDOVER(SET) | CCAD TAG(SET) | CCAD REV(SET) | CCADACF (SET) | FSP CODE | CCAD SSCF | CCAD SUB ZONE MEP(SET) | CCAD CSA | Act Selector % |
| --- | --- | --- | --- | --- | --- | --- | --- | --- | --- | --- | --- | --- | --- | --- | --- | --- | --- | --- | --- | --- | --- | --- | --- | --- | --- | --- | --- | --- | --- | --- | --- | --- | --- |
|  | DP1 | **PARKING AREA ; Zone PD-1** |  | 2011-10-01 | 2012-09-18 |  |  |  |  |  |  |  |  |  |  |  |  |  |  |  |  |  |  |  |  |  |  |  |  |  |  |  |  |
| PP3DP09901C10 |  | PA-P3 ; Prime & 1st coat (Wall & Ceiling) (Parking Area)_PD-1 | 18d | 2011-10-01 | 2011-10-20 | PGLS403391C0 | 8d | 0d | CEILING PAINT [1176 h]; WALL PAINT [255 h]; CEILING PAINT [1467.25 m2]; WALL PAINT [316.75 m2]; Cost | 328 | 956 | CP3PA09901C0 | PP3DP09901C0 | PA | C | P3 | PK | PA | 099 | 01 | PD | S | BILL 2 | B02 | S2 | 01 | R00 | ACF06 | PD-1 | 099 |  |  |  |
| PP3DP21114C10 |  | PA-P3 ; 1st Fix, Fire Fighting system (Parking Area)_PD-1 | 33d | 2011-10-22 | 2011-12-04 | PGLS403391C0, PP3DP09901C10 | 8d | 0d | MECHANICAL [201.6 h]; Cost |  |  | CP3PA21109C0 | PP3DP21114C0 | PA | C | P3 | PK | ME | 211 | 14 | PD | S | BILL 2 | B02 | S2 | 1F | R00 | ACF04 | PD-1 | 211 | 1S | MEP | M1F |
| PP3DP21124C10 |  | PA-P3 ; 2nd Fix, Fire Fighting system (Parking Area)_PD-1 | 33d | 2011-12-05 | 2012-01-12 | PP3DP21114C10 | 158d | 110.12d | MECHANICAL [248.4 h]; Cost |  |  | CP3PA21115C0 | PP3DP21124C0 | PA | C | P3 | PK | ME | 211 | 24 | PD | S | BILL 2 | B02 | S2 | 2F | R00 | ACF07 | PD-1 | 211 | 2n | MEP |  |
| PP3DP22015C10 |  | PA-P3 ; 1st Fix, Plumbing / Drainage System (Parking Area)_PD-1 | 33d | 2011-12-05 | 2012-01-12 | PP3DP21114C10 SS, PP3DP09901C10, PP3DP21114C10 | 73.6d | 0d | PLUMBING [538.8 h]; Cost |  |  | CP3PA22001C0 | PP3DP22015C0 | PA | C | P3 | PK | ME | 220 | 15 | PD | S | BILL 2 | B02 | S2 | 1F | R00 | ACF04 | PD-1 | 220 | 1S | MEP | M1F |
| PP3DP22025C10 |  | PA-P3 ; 2nd Fix, Plumbing / Drainage System (Parking Area)_PD-1 | 33d | 2012-01-14 | 2012-02-21 | PP3DP22015C10 | 137d | 89.12d | PLUMBING [604.8 h]; Cost |  |  | CP3PA22011C0 | PP3DP22025C0 | PA | C | P3 | PK | ME | 220 | 25 | PD | S | BILL 2 | B02 | S2 | 2F | R00 | ACF07 | PD-1 | 220 | 2n | MEP |  |
| PP3DP23011C10 |  | PA-P3 ; 1st Fix, CHW / HVAC System (Parking Area)_PD-1 | 33d | 2012-01-14 | 2012-02-21 | PP3DP22015C10 SS, PP3DP09901C10, PP3DP22015C10 | 73.6d | 0d | MECHANICAL [1394.4 h]; Cost |  |  | CP3PA23001C0 | PP3DP23011C0 | PA | C | P3 | PK | ME | 230 | 11 | PD | S | BILL 2 | B02 | S2 | 1F | R00 | ACF04 | PD-1 | 230 | 1S | MEP | M1F |
| PP3DP23021C10 |  | PA-P3 ; 2nd Fix, CHW / HVAC System (Parking Area)_PD-1 | 33d | 2012-02-22 | 2012-03-31 | PP3DP23011C10 | 73.6d | 32.12d | MECHANICAL [1394.4 h]; Cost |  |  | CP3PA23011C0 | PP3DP23021C0 | PA | C | P3 | PK | ME | 230 | 21 | PD | S | BILL 2 | B02 | S2 | 2F | R00 | ACF07 | PD-1 | 230 | 2n | MEP |  |
| PP3DP26012C10 |  | PA-P3 ; 1st Fix, Electrical System (Parking Area)_PD-1 | 33d | 2012-02-22 | 2012-03-31 | PP3DP21114C10 SS, PP3DP09901C10, PP3DP23011C10 | 74d | 0d | ELECTRICAL [1390.8 h]; Cost |  |  | CP3PA26001C0 | PP3DP26012C0 | PA | C | P3 | PK | ME | 260 | 12 | PD | S | BILL 2 | B02 | S2 | 1F | R00 | ACF04 | PD-1 | 260 | 1S | MEP | M1F |
| PP3DP26022C10 |  | PA-P3 ; 2nd Fix, Electrical System (Parking Area)_PD-1 | 33d | 2012-04-01 | 2012-05-08 | PP3DP26012C10 | 95d | 47.12d | ELECTRICAL [1297.2 h]; Cost |  |  | CP3PA26005C0 | PP3DP26022C0 | PA | C | P3 | PK | ME | 260 | 22 | PD | S | BILL 2 | B02 | S2 | 2F | R00 | ACF07 | PD-1 | 260 | 2n | MEP |  |
| PP3DP27013C10 |  | PA-P3 ; 1st Fix, ELV system (Parking Area)_PD-1 | 33d | 2012-04-01 | 2012-05-08 | PP3DP09901C10, PP3DP26012C10 | 74d | 0d | ELECTRICAL [211.2 h]; Cost |  |  | CP3PA27010C0 | PP3DP27013C0 | PA | C | P3 | PK | ME | 270 | 13 | PD | S | BILL 2 | B02 | S2 | 1F | R00 | ACF04 | PD-1 | 270 | 1S | MEP | M1F |
| PP3DP09902C10 |  | PA-P3 ; 2nd coat (Wall & Ceiling) (Parking Area)_PD-1 | 12d | 2012-05-08 | 2012-05-22 | PP3DP09901C10, PP3DP23021C10, PP1DP09902C10 SS | 47.88d | 0d | CEILING PAINT [633 h]; WALL PAINT [137 h]; CEILING PAINT [790 m2]; WALL PAINT [170.5 m2]; Cost | 329 | 957 | CP3PA09903C0 | PP3DP09902C0 | PA | C | P3 | PK | PA | 099 | 02 | PD | S | BILL 2 | B02 | S2 | 02 | R00 | ACF06 | PD-1 | 099 |  |  |  |
| PP3DP27023C10 |  | PA-P3 ; 2nd Fix, ELV system (Parking Area)_PD-1 | 33d | 2012-05-09 | 2012-06-17 | PP3DP27013C10 | 74d | 26.12d | ELECTRICAL [211.2 h]; Cost |  |  | CP3PA27020C0 | PP3DP27023C0 | PA | C | P3 | PK | ME | 270 | 23 | PD | S | BILL 2 | B02 | S2 | 2F | R00 | ACF07 | PD-1 | 270 | 2n | MEP |  |
| PP3DP21113C10 |  | PA-P3 ; Final Fix, Fire Fighting system (Parking Area)_PD-1 | 12d | 2012-05-22 | 2012-06-05 | PP3DP09902C10, PP3DP21124C10, PP2S103331C280, PP3DP23021C10 | 47.88d | 0d | MECHANICAL [201.6 h]; Cost |  |  | CP3PA21113C0 | PP3DP21113C0 | PA | C | P3 | PK | ME | 211 | 13 | PD | S | BILL 2 | B02 | S2 | FF | R00 | ACF07 | PD-1 | 211 | FF | MEP |  |
| PP3DP22011C10 |  | PA-P3 ; Final Fix, Drainage System (Parking Area)_PD-1 | 12d | 2012-06-05 | 2012-06-20 | PP3DP09902C10, PP3DP22025C10, PP2S103331C280, PP3DP23021C10, PP3DP21113C10 | 47.88d | 0d | PLUMBING [538.8 h]; Cost |  |  | CP3PA22011C0 | PP3DP22011C0 | PA | C | P3 | PK | ME | 220 | 11 | PD | S | BILL 2 | B02 | S2 | FF | R00 | ACF07 | PD-1 | 220 | FF | MEP |  |
| PP3DP23019C10 |  | PA-P3 ; Final Fix, CHW / HVAC System (Parking Area)_PD-1 | 12d | 2012-06-20 | 2012-07-04 | PP3DP09902C10, PP3DP23021C10, PP2S103331C280, PP3DP23021C10 FF, PP3DP22011C10 | 47.88d | 0d | MECHANICAL [1394.4 h]; Cost |  |  | CP3PA23019C0 | PP3DP23019C0 | PA | C | P3 | PK | ME | 230 | 19 | PD | S | BILL 2 | B02 | S2 | FF | R00 | ACF07 | PD-1 | 230 | FF | MEP |  |
| PP3DP26017C10 |  | PA-P3 ; Final Fix, Electrical System (Parking Area)_PD-1 | 12d | 2012-07-04 | 2012-07-18 | PP3DP09902C10, PP3DP26022C10, PP2S103331C280, PP3DP23021C10, PP3DP23019C10 | 47.88d | 0d | ELECTRICAL [1297.2 h]; Cost |  |  | CP3PA26017C0 | PP3DP26017C0 | PA | C | P3 | PK | ME | 260 | 17 | PD | S | BILL 2 | B02 | S2 | FF | R00 | ACF07 | PD-1 | 260 | FF | MEP |  |
| PP3DP27030C10 |  | PA-P3 ; Final Fix, ELV system (Parking Area)_PD-1 | 12d | 2012-07-18 | 2012-08-01 | PP3DP09902C10, PP3DP27023C10, PP2S103331C280, PP3DP23021C10, PP3DP26017C10 | 47.88d | 0d | ELECTRICAL [211.2 h]; Cost |  |  | CP3PA27030C0 | PP3DP27030C0 | PA | C | P3 | PK | ME | 270 | 30 | PD | S | BILL 2 | B02 | S2 | FF | R00 | ACF07 | PD-1 | 270 | FF | MEP |  |
| PP3DP09903C10 |  | PA-P3 ; Concrete Sealer (Floor) (Parking Area)_PD-1 | 13d | 2012-08-01 | 2012-08-16 | PP3DP21113C10, PP3DP22011C10, PP3DP26017C10, PP3DP27030C10, PP2S103331C280, PP3DP23021C10 | 47.88d | 0d | ASSORTED FLOOR FINISH [1976 h]; ASSORTED FLOOR FINISH [1096.75 m2]; Cost |  |  | AP3PK09903C0 | PP3DP09903C0 | PA | C | P3 | PK | FF | 096 | 03 | PD | S | BILL 2 | B02 | S2 | 05 | R00 | ACF06 | PD-1 | CS |  |  |  |
| PP3DP05509C10 |  | PA-P3 ; Grill & Louvers (Parking Area)_PD-1 | 7d | 2012-08-16 | 2012-08-27 | PP3DP09903C10, PP2S103331C280, PP3DP23021C10 | 66.88d | 58.88d | SECONDARY STEEL [143 h]; Cost | 328 | 956 | CP3PA09901C0 | PP3AP09901C0 | PA | C | P3 | PK | SW | 055 | 01 | PD | S | BILL 2 | B02 | S2 | 02 | R00 | ACF03 | PD-1 | 056 |  |  |  |
| PP3DP11006C10 |  | PA-P3 ; Wall Protection (WP, CG, WG, FCG) (Parking Area)_PD-1 | 10d | 2012-08-16 | 2012-08-30 | OGNMU00063S0, PP3DP09903C10, PP2S103331C280, PP3DP23021C10 | 47.88d | 0d | FF&E [39 h]; Cost | 326 | 1001 | CP3PA11001C0 | PP3DP11006C0 | PA | C | P3 | PK | WF | 097 | 06 | PD | S | BILL 2 | B02 | S2 | 03 | R00 | ACF08 | PD-1 | 097 |  |  |  |
| PP3DP11004C10 |  | PA-P3 ; Floor Marking & Signage (Parking Area)_PD-1 | 8d | 2012-08-30 | 2012-09-09 | OGNMU00071S0, PP3DP09903C10, PP3DP11006C10, PP2S103331C280, PP3DP23021C10 FF | 47.88d | 0d | SIGNAGES [457 h]; SIGNAGES [63.5 no]; Cost |  |  | AP3PK11004C0 | PP3DP11004C0 | PA | C | P3 | PK | SA | 110 | 04 | PD | S | BILL 2 | B02 | S2 | 09 | R00 | ACF08 | PD-1 | c |  |  |  |
| PP3DP11009C10 |  | PA-P3 ; FF&E (Parking Area)_PD-1 | 8d | 2012-09-09 | 2012-09-18 | PP3DP11004C10, PP2S103331C280, PP3DP23021C10 | 47.88d | 39.88d | FF&E [518 h]; Cost |  |  | AP3PK11004C0 | PP3BP11004C0 | PA | C | P3 | PK | SA | 110 | 04 | PB | S | BILL 2 | B02 | S2 | 01 | R00 | ACF08 | PD-1 | a |  |  |  |
|  | DP2 | **PARKING AREA ; Zone PD-2** |  | 2012-05-26 | 2012-12-25 |  |  |  |  |  |  |  |  |  |  |  |  |  |  |  |  |  |  |  |  |  |  |  |  |  |  |  |  |
| PP3DP09901C20 |  | PA-P3 ; Prime & 1st coat (Wall & Ceiling) (Parking Area)_PD-2 | 18d | 2012-05-26 | 2012-06-17 | PGLS403392C0 SS, PGLS503391C0 SS, PGLS503392C0 SS | 17.07d | 0d | CEILING PAINT [3527 h]; WALL PAINT [763 h]; CEILING PAINT [4401.75 m2]; WALL PAINT [950.25 m2]; Cost | 328 | 956 | CP3PA09901C0 | PP3DP09901C0 | PA | C | P3 | PK | PA | 099 | 01 | PD | S | BILL 2 | B02 | S2 | 01 | R00 | ACF06 | PD-2 | 099 |  |  |  |
| PP3DP21114C20 |  | PA-P3 ; 1st Fix, Fire Fighting system (Parking Area)_PD-2 | 18d | 2012-06-17 | 2012-07-08 | PP3DP09901C20 | 17.07d | 0d | MECHANICAL [603.6 h]; Cost |  |  | CP3PA21109C0 | PP3DP21114C0 | PA | C | P3 | PK | ME | 211 | 14 | PD | S | BILL 2 | B02 | S2 | 1F | R00 | ACF04 | PD-2 | 211 | 1S | MEP | M1F |
| PP3DP21124C20 |  | PA-P3 ; 2nd Fix, Fire Fighting system (Parking Area)_PD-2 | 30d | 2012-07-08 | 2012-08-12 | PP3DP21114C20 | 18.2d | 0d | MECHANICAL [744 h]; Cost |  |  | CP3PA21115C0 | PP3DP21124C0 | PA | C | P3 | PK | ME | 211 | 24 | PD | S | BILL 2 | B02 | S2 | 2F | R00 | ACF07 | PD-2 | 211 | 2n | MEP |  |
| PP3DP22015C20 |  | PA-P3 ; 1st Fix, Plumbing / Drainage System (Parking Area)_PD-2 | 18d | 2012-07-08 | 2012-07-29 | PP3DP21114C20 SS, PP3DP09901C20, PP3DP21114C20 | 17.07d | 0d | PLUMBING [1617.6 h]; Cost |  |  | CP3PA22001C0 | PP3DP22015C0 | PA | C | P3 | PK | ME | 220 | 15 | PD | S | BILL 2 | B02 | S2 | 1F | R00 | ACF04 | PD-2 | 220 | 1S | MEP | M1F |
| PP3DP09902C20 |  | PA-P3 ; 2nd coat (Wall & Ceiling) (Parking Area)_PD-2 | 27d | 2012-07-23 | 2012-08-26 | PP3DP09901C20, PGLS103331C290, PGLS103331C300, PGLS403392C20, PGLS503392C10 | 20.2d | 2d | CEILING PAINT [1899 h]; WALL PAINT [411 h]; CEILING PAINT [2370 m2]; WALL PAINT [511.5 m2]; Cost | 329 | 957 | CP3PA09903C0 | PP3DP09902C0 | PA | C | P3 | PK | PA | 099 | 02 | PD | S | BILL 2 | B02 | S2 | 02 | R00 | ACF06 | PD-2 | 099 |  |  |  |
| PP3DP22025C20 |  | PA-P3 ; 2nd Fix, Plumbing / Drainage System (Parking Area)_PD-2 | 30d | 2012-07-29 | 2012-09-04 | PP3DP22015C20 | 23.07d | 0d | PLUMBING [1815.6 h]; Cost |  |  | CP3PA22011C0 | PP3DP22025C0 | PA | C | P3 | PK | ME | 220 | 25 | PD | S | BILL 2 | B02 | S2 | 2F | R00 | ACF07 | PD-2 | 220 | 2n | MEP |  |
| PP3DP23011C20 |  | PA-P3 ; 1st Fix, CHW / HVAC System (Parking Area)_PD-2 | 18d | 2012-07-29 | 2012-08-21 | PP3DP22015C20 SS, PP3DP09901C20, PP3DP22015C20 | 17.07d | 0d | MECHANICAL [4182 h]; Cost |  |  | CP3PA23001C0 | PP3DP23011C0 | PA | C | P3 | PK | ME | 230 | 11 | PD | S | BILL 2 | B02 | S2 | 1F | R00 | ACF04 | PD-2 | 230 | 1S | MEP | M1F |
| PP3DP21113C20 |  | PA-P3 ; Final Fix, Fire Fighting system (Parking Area)_PD-2 | 12d | 2012-08-12 | 2012-08-28 | PP3DP09902C20 FF, PP3DP21124C20, PGLS103331C290, PGLS103331C300, PGLS403392C20, PGLS503392C10 | 18.2d | 0d | MECHANICAL [603.6 h]; Cost |  |  | CP3PA21113C0 | PP3DP21113C0 | PA | C | P3 | PK | ME | 211 | 13 | PD | S | BILL 2 | B02 | S2 | FF | R00 | ACF07 | PD-2 | 211 | FF | MEP |  |
| PP3DP23021C20 |  | PA-P3 ; 2nd Fix, CHW / HVAC System (Parking Area)_PD-2 | 30d | 2012-08-21 | 2012-09-25 | PP3DP23011C20 | 17.07d | 0d | MECHANICAL [4182 h]; Cost |  |  | CP3PA23011C0 | PP3DP23021C0 | PA | C | P3 | PK | ME | 230 | 21 | PD | S | BILL 2 | B02 | S2 | 2F | R00 | ACF07 | PD-2 | 230 | 2n | MEP |  |
| PP3DP26012C20 |  | PA-P3 ; 1st Fix, Electrical System (Parking Area)_PD-2 | 18d | 2012-08-21 | 2012-09-11 | PP3DP21114C20 SS, PP3DP09901C20, PP3DP23011C20 | 17.07d | 0d | ELECTRICAL [4171.2 h]; Cost |  |  | CP3PA26001C0 | PP3DP26012C0 | PA | C | P3 | PK | ME | 260 | 12 | PD | S | BILL 2 | B02 | S2 | 1F | R00 | ACF04 | PD-2 | 260 | 1S | MEP | M1F |
| PP3DP22011C20 |  | PA-P3 ; Final Fix, Drainage System (Parking Area)_PD-2 | 12d | 2012-09-04 | 2012-09-18 | PP3DP09902C20 FF, PP3DP22025C20, PGLS103331C290, PGLS103331C300, PGLS403392C20, PGLS503392C10, PP3DP21113C20 | 23.07d | 6d | PLUMBING [1617.6 h]; Cost |  |  | CP3PA22011C0 | PP3DP22011C0 | PA | C | P3 | PK | ME | 220 | 11 | PD | S | BILL 2 | B02 | S2 | FF | R00 | ACF07 | PD-2 | 220 | FF | MEP |  |
| PP3DP26022C20 |  | PA-P3 ; 2nd Fix, Electrical System (Parking Area)_PD-2 | 18d | 2012-09-11 | 2012-10-02 | PP3DP26012C20 | 23.07d | 6d | ELECTRICAL [3890.4 h]; Cost |  |  | CP3PA26005C0 | PP3DP26022C0 | PA | C | P3 | PK | ME | 260 | 22 | PD | S | BILL 2 | B02 | S2 | 2F | R00 | ACF07 | PD-2 | 260 | 2n | MEP |  |
| PP3DP27013C20 |  | PA-P3 ; 1st Fix, ELV system (Parking Area)_PD-2 | 18d | 2012-09-11 | 2012-10-02 | PP3DP09901C20, PP3DP26012C20 | 17.07d | 0d | ELECTRICAL [632.4 h]; Cost |  |  | CP3PA27010C0 | PP3DP27013C0 | PA | C | P3 | PK | ME | 270 | 13 | PD | S | BILL 2 | B02 | S2 | 1F | R00 | ACF04 | PD-2 | 270 | 1S | MEP | M1F |
| PP3DP23019C20 |  | PA-P3 ; Final Fix, CHW / HVAC System (Parking Area)_PD-2 | 12d | 2012-09-25 | 2012-10-09 | PP3DP09902C20 FF, PP3DP23021C20, PGLS103331C290, PGLS103331C300, PGLS403392C20, PGLS503392C10, PP3DP22011C20 | 17.07d | 0d | MECHANICAL [4182 h]; Cost |  |  | CP3PA23019C0 | PP3DP23019C0 | PA | C | P3 | PK | ME | 230 | 19 | PD | S | BILL 2 | B02 | S2 | FF | R00 | ACF07 | PD-2 | 230 | FF | MEP |  |
| PP3DP27023C20 |  | PA-P3 ; 2nd Fix, ELV system (Parking Area)_PD-2 | 18d | 2012-10-02 | 2012-10-23 | PP3DP27013C20 | 17.07d | 0d | ELECTRICAL [632.4 h]; Cost |  |  | CP3PA27020C0 | PP3DP27023C0 | PA | C | P3 | PK | ME | 270 | 23 | PD | S | BILL 2 | B02 | S2 | 2F | R00 | ACF07 | PD-2 | 270 | 2n | MEP |  |
| PP3DP26017C20 |  | PA-P3 ; Final Fix, Electrical System (Parking Area)_PD-2 | 12d | 2012-10-09 | 2012-10-23 | PP3DP26022C20, PGLS103331C290, PGLS103331C300, PGLS403392C20, PGLS503392C10, PP3DP23019C20 | 17.07d | 0d | ELECTRICAL [3890.4 h]; Cost |  |  | CP3PA26017C0 | PP3DP26017C0 | PA | C | P3 | PK | ME | 260 | 17 | PD | S | BILL 2 | B02 | S2 | FF | R00 | ACF07 | PD-2 | 260 | FF | MEP |  |
| PP3DP27030C20 |  | PA-P3 ; Final Fix, ELV system (Parking Area)_PD-2 | 12d | 2012-10-23 | 2012-11-08 | PP3DP09902C20 FF, PP3DP27023C20, PP3DP27023C20 FF, PGLS103331C290, PGLS103331C300, PGLS403392C20, PGLS503392C10, PP3DP26017C20 | 17.07d | 0d | ELECTRICAL [632.4 h]; Cost |  |  | CP3PA27030C0 | PP3DP27030C0 | PA | C | P3 | PK | ME | 270 | 30 | PD | S | BILL 2 | B02 | S2 | FF | R00 | ACF07 | PD-2 | 270 | FF | MEP |  |
| PP3DP09903C20 |  | PA-P3 ; Concrete Sealer (Floor) (Parking Area)_PD-2 | 12d | 2012-11-08 | 2012-11-24 | PP3DP21113C20, PP3DP22011C20, PP3DP23019C20, PP3DP26017C20, PP3DP27030C20, PGLS103331C290, PGLS103331C300, PGLS403392C20, PGLS503392C10 | 17.07d | 0d | ASSORTED FLOOR FINISH [5928 h]; ASSORTED FLOOR FINISH [3290.25 m2]; Cost |  |  | AP3PK09903C0 | PP3DP09903C0 | PA | C | P3 | PK | FF | 096 | 03 | PD | S | BILL 2 | B02 | S2 | 05 | R00 | ACF06 | PD-2 | CS |  |  |  |
| PP3DP05509C20 |  | PA-P3 ; Grill & Louvers (Parking Area)_PD-2 | 12d | 2012-11-24 | 2012-12-09 | PP3DP09903C20, PGLS103331C290, PGLS103331C300, PGLS403392C20, PGLS503392C10 | 31.2d | 19.12d | SECONDARY STEEL [429 h]; Cost | 328 | 956 | CP3PA09901C0 | PP3AP09901C0 | PA | C | P3 | PK | SW | 055 | 01 | PD | S | BILL 2 | B02 | S2 | 02 | R00 | ACF03 | PD-2 | 056 |  |  |  |
| PP3DP11006C20 |  | PA-P3 ; Wall Protection (WP, CG, WG, FCG) (Parking Area)_PD-2 | 6d | 2012-11-24 | 2012-12-01 | OGNMU00063S0, PP3DP09903C20, PGLS103331C290, PGLS103331C300, PGLS403392C20, PGLS503392C10 | 17.07d | 0d | FF&E [114 h]; Cost | 326 | 1001 | CP3PA11001C0 | PP3DP11006C0 | PA | C | P3 | PK | WF | 097 | 06 | PD | S | BILL 2 | B02 | S2 | 03 | R00 | ACF08 | PD-2 | 097 |  |  |  |
| PP3DP11004C20 |  | PA-P3 ; Floor Marking & Signage (Parking Area)_PD-2 | 15.12d | 2012-12-01 | 2012-12-19 | OGNMU00071S0, PP3DP09903C20, PP3DP11006C20, PGLS103331C290, PGLS103331C300, PGLS403392C20, PGLS503392C10 | 17.07d | 0d | SIGNAGES [1370 h]; SIGNAGES [190.5 no]; Cost |  |  | AP3PK11004C0 | PP3DP11004C0 | PA | C | P3 | PK | SA | 110 | 04 | PD | S | BILL 2 | B02 | S2 | 09 | R00 | ACF08 | PD-2 | c |  |  |  |
| PP3DP11009C20 |  | PA-P3 ; FF&E (Parking Area)_PD-2 | 5d | 2012-12-19 | 2012-12-25 | PP3DP11004C20, PGLS103331C290, PGLS103331C300, PGLS403392C20, PGLS503392C10 | 17.07d | 5d | FF&E [1553 h]; Cost |  |  | AP3PK11004C0 | PP3BP11004C0 | PA | C | P3 | PK | SA | 110 | 04 | PD | S | BILL 2 | B02 | S2 | 01 | R00 | ACF08 | PD-2 | a |  |  |  |

| ID | WBS | Activity | Duration | Start | Finish | Predecessors | Total float | Free float | Resources | Change Order # | NEW ACTIVITY ID | change id | IDDD | CCAD BUILDING(SET) | CCAD PHASE(SET) | CCAD FLOOR(SET) | CCAD ZONE(SET) | CCAD WORK(SET) | CCAD SECTION(SET) | CCAD SERIAL No.(SET) | CCAD Carpark code(SET) | CCAD Carpark district code(set) | CCAD CBS(SET) | CCAD BILL(SET) | CCAD HANDOVER(SET) | CCAD TAG(SET) | CCAD REV(SET) | CCADACF (SET) | FSP CODE | CCAD SSCF | CCAD SUB ZONE MEP(SET) | CCAD CSA | Act Selector % | CCAD MEQ | CCAD DIVISION(SET) |
| --- | --- | --- | --- | --- | --- | --- | --- | --- | --- | --- | --- | --- | --- | --- | --- | --- | --- | --- | --- | --- | --- | --- | --- | --- | --- | --- | --- | --- | --- | --- | --- | --- | --- | --- | --- |
|  | DM1 | **MECHANICAL ROOMS (2 NOS.) ; Zone PD-1** |  | 2011-10-01 | 2012-07-01 |  |  |  |  |  |  |  |  |  |  |  |  |  |  |  |  |  |  |  |  |  |  |  |  |  |  |  |  |  |  |
| PP3DM09902C0 |  | PA-P3 ; Wall Prime & 1st coat (Mech RM)_PD-1 | 18d | 2011-10-01 | 2011-10-20 | PAFOA09201C1 SS, PGLS403391C0 | 113d | 0d | WALL PAINT [457 h]; WALL PAINT [569 m2]; Cost | 328 | 1469 | C04ME09901C0 | PP3DM09902C0 | PA | C | P3 | M1 | PA | 099 | 02 | PD | S | BILL 2 | B02 | S2 | 01 | R00 | ACF06 | PD-1 | 099 |  |  |  |  |  |
| PP3DM04001C0 |  | PA-P3 ; Block Wall Works (Mech RM)_PD-1 | 30d | 2011-10-22 | 2011-11-29 | PGLS403391C0, PP3DM09902C0 | 113d | 0d | BLOCKWORKS [485 h]; BLOCKWORKS [138.5 m2]; Cost |  |  | AP3M104001C0 | PP3DM04001C0 | PA | C | P3 | M1 | BL | 040 | 01 | PD | S | BILL 2 | B02 | S2 | BL | R00 | ACF06 | PD-1 | 040 |  |  |  |  |  |
| PP3DM23003C0 |  | PA-P3 ; 1st Fix, Inst. of Supports for MEP (Mech RM)_PD-1 | 12d | 2011-11-30 | 2011-12-14 | PP3DM04001C0 | 113d | 0d | MECHANICAL [313.2 h]; Cost |  |  | C04ME23001C0 | PP3DM23003C0 | PA | C | P3 | M1 | ME | 230 | 03 | PD | S | BILL 2 | B02 | S2 | 1F | R00 | ACF04 | PD-1 | 230 | 1S | MEP | M1F |  |  |
| PP3DM21102C0 |  | PA-P3 ; 1st Fix, Inst of Sprinkler main pipe (Mech RM)_PD-1 | 30d | 2011-12-15 | 2012-01-19 | PP3DM23003C0, PP3DM04001C0 | 113d | 0d | MECHANICAL [4911.6 h]; Cost |  |  | C04ME21111C0 | PP3DM21102C0 | PA | C | P3 | M1 | ME | 211 | 02 | PD | S | BILL 2 | B02 | S2 | 1F | R00 | ACF04 | PD-1 | 211 | 1S | MEP | M1F |  |  |
| PP3DM22001C0 |  | PA-P3 ; 1st Fix, Inst of Drainage pipe (Mech RM)_PD-1 | 30d | 2011-12-15 | 2012-01-19 | PP3DM23003C0, PP3DM04001C0 | 173d | 0d | PLUMBING [1078.8 h]; Cost |  |  | C04ME22011C0 | PP3DM22001C0 | PA | C | P3 | M1 | ME | 220 | 01 | PD | S | BILL 2 | B02 | S2 | 1F | R00 | ACF04 | PD-1 | 220 | 1S | MEP | M1F |  |  |
| PP3DM22003C0 |  | PA-P3 ; 1st Fix, Inst of Water supply pipe (Mech RM)_PD-1 | 30d | 2011-12-15 | 2012-01-19 | PP3DM23003C0, PP3DM04001C0 | 173d | 0d | PLUMBING [3042 h]; Cost |  |  | C04ME22006C0 | PP3DM22003C0 | PA | C | P3 | M1 | ME | 220 | 03 | PD | S | BILL 2 | B02 | S2 | 1F | R00 | ACF04 | PD-1 | 220 | 1S | MEP | M1F |  |  |
| PP3DM23001C0 |  | PA-P3 ; 1st Fix, Inst of CHW pipe (Mech RM)_PD-1 | 30d | 2011-12-15 | 2012-01-19 | PP3DM23003C0, PP3DM04001C0 | 185d | 0d | MECHANICAL [1549.2 h]; Cost |  |  | C04ME23019C0 | PP3DM23001C0 | PA | C | P3 | M1 | ME | 230 | 01 | PD | S | BILL 2 | B02 | S2 | 1F | R00 | ACF04 | PD-1 | 230 | 1S | MEP | M1F |  |  |
| PP3DM23004C0 |  | PA-P3 ; 2nd Fix, Inst of Equipment (AHU) (Mech RM)_PD-1 | 30d | 2011-12-15 | 2012-01-19 | PP2S403351C0 FS+14d, PP3DM04001C0, PP3DM22001C0 FF, PP3DM22003C0 FF | 173d | 0d | MECHANICAL [264 h]; Cost |  |  | C04ME23013C0 | PP3DM23004C0 | PA | C | P3 | M1 | ME | 230 | 04 | PD | S | BILL 2 | B02 | S2 | 2F | R00 | ACF04 | PD-1 | 230 | 2n | MEP |  | H |  |
| PP3DM21101C0 |  | PA-P3 ; 1st Fix, Inst of Sprinkler branch pipe (Mech RM)_PD-1 | 30d | 2012-01-21 | 2012-02-25 | PP3DM21102C0 SS, PP3DM04001C0, PP3DM21102C0 | 155d | 0d | MECHANICAL [4038 h]; Cost |  |  | C04ME21119C0 | PP3DM21101C0 | PA | C | P3 | M1 | ME | 211 | 01 | PD | S | BILL 2 | B02 | S2 | 1F | R00 | ACF04 | PD-1 | 211 | 1S | MEP | M1F |  |  |
| PP3DM21105C0 |  | PA-P3 ; 2nd Fix, Inst of Zone Control Valve (Mech RM)_PD-1 | 30d | 2012-01-21 | 2012-02-25 | PP3DM23001C0, PP3DM23004C0 | 203d | 62.12d | MECHANICAL [463.2 h]; Cost |  |  | C04ME21117C0 | PP3DM21105C0 | PA | C | P3 | M1 | ME | 211 | 05 | PD | S | BILL 2 | B02 | S2 | 2F | R00 | ACF07 | PD-1 | 211 | 2n | MEP |  |  |  |
| PP3DM23002C0 |  | PA-P3 ; 1st Fix, Inst of Ducting (Mech RM)_PD-1 | 30d | 2012-01-21 | 2012-02-25 | PP3DM23003C0, PP3DM04001C0, PP3DM21102C0 | 113d | 0d | MECHANICAL [1974 h]; Cost |  |  | C04ME23005C0 | PP3DM23002C0 | PA | C | P3 | M1 | ME | 230 | 02 | PD | S | BILL 2 | B02 | S2 | 1F | R00 | ACF04 | PD-1 | 230 | 1S | MEP | M1F |  |  |
| PP3DM23005C0 |  | PA-P3 ; 2nd Fix, Inst of Equipment (FCU,FAN,PUMP) (Mech RM)_PD-1 | 30d | 2012-01-21 | 2012-02-25 | PP3DM23004C0 | 173d | 0d | MECHANICAL [1123.2 h]; Cost |  |  | C04ME23011C0 | PP3DM23005C0 | PA | C | P3 | M1 | ME | 230 | 05 | PD | S | BILL 2 | B02 | S2 | 2F | R00 | ACF04 | PD-1 | 230 | 2n | MEP |  | H |  |
| PP3DM26004C0 |  | PA-P3 ; 2nd Fix, Inst of Equipment (DB, TR, SG) (Mech RM)_PD-1 | 30d | 2012-01-21 | 2012-02-25 | PP3DM23004C0 | 203d | 62.12d | ELECTRICAL [596.4 h]; Cost |  |  | C04ME26009C0 | PP3DM26004C0 | PA | C | P3 | M1 | ME | 260 | 04 | PD | S | BILL 2 | B02 | S2 | 2F | R00 | ACF04 | PD-1 | 260 | 2n | MEP |  | E |  |
| PP3DM27003C0 |  | PA-P3 ; 2nd Fix, Inst of ELV Equipment (Panels) (Mech RM)_PD-1 | 30d | 2012-01-21 | 2012-02-25 | PP3DM23004C0 | 203d | 62.12d | ELECTRICAL [92.4 h]; Cost |  |  | C04ME27020C0 | PP3DM27003C0 | PA | C | P3 | M1 | ME | 270 | 03 | PD | S | BILL 2 | B02 | S2 | 2F | R00 | ACF04 | PD-1 | 270 | 2n | MEP |  | E |  |
| PP3DM21104C0 |  | PA-P3 ; 2nd Fix, Inst of Sprinkler droppers (Mech RM)_PD-1 | 30d | 2012-02-26 | 2012-03-31 | PP3DM21101C0, PAFOA09201C1, PP3DM22001C0, PP3DM22003C0, PP3DM23004C0 FS+12d | 155d | 32.12d | MECHANICAL [1599.6 h]; Cost |  |  | C04ME21115C0 | PP3DM21104C0 | PA | C | P3 | M1 | ME | 211 | 04 | PD | S | BILL 2 | B02 | S2 | 2F | R00 | ACF07 | PD-1 | 211 | 2n | MEP |  |  |  |
| PP3DM23006C0 |  | PA-P3 ; 2nd Fix, Inst of VAV'S CHW connection (Mech RM)_PD-1 | 30d | 2012-02-26 | 2012-03-31 | PP3DM23005C0 | 173d | 32.12d | MECHANICAL [25.2 h]; Cost |  |  | C04ME23009C0 | PP3DM23006C0 | PA | C | P3 | M1 | ME | 230 | 06 | PD | S | BILL 2 | B02 | S2 | 2F | R00 | ACF07 | PD-1 | 230 | 2n | MEP |  |  |  |
| PP3DM23007C0 |  | PA-P3 ; 2nd Fix, Inst of VCD's/FD's (Mech RM)_PD-1 | 30d | 2012-02-26 | 2012-03-31 | PP3DM23002C0 | 155d | 32.12d | MECHANICAL [584.4 h]; Cost |  |  | C04ME23015C0 | PP3DM23007C0 | PA | C | P3 | M1 | ME | 230 | 07 | PD | S | BILL 2 | B02 | S2 | 2F | R00 | ACF07 | PD-1 | 230 | 2n | MEP |  |  |  |
| PP3DM23008C0 |  | PA-P3 ; 2nd Fix, Insulation of CHW pipe & Duct (Mech RM)_PD-1 | 30d | 2012-02-26 | 2012-03-31 | PP3DM23001C0, PP3DM23002C0 | 155d | 32.12d | MECHANICAL [1851.6 h]; Cost |  |  | C04ME23017C0 | PP3DM23008C0 | PA | C | P3 | M1 | ME | 230 | 08 | PD | S | BILL 2 | B02 | S2 | 2F | R00 | ACF07 | PD-1 | 230 | 2n | MEP |  |  |  |
| PP3DM26001C0 |  | PA-P3 ; 1st Fix, Inst of Cable Tray (Mech RM)_PD-1 | 30d | 2012-02-26 | 2012-03-31 | PP3DM04001C0, PP3DM23002C0 | 113d | 0d | ELECTRICAL [32.4 h]; Cost |  |  | C04ME26011C0 | PP3DM26001C0 | PA | C | P3 | M1 | ME | 260 | 01 | PD | S | BILL 2 | B02 | S2 | 1F | R00 | ACF04 | PD-1 | 260 | 1S | MEP | M1F |  |  |
| PP3DM26002C0 |  | PA-P3 ; 1st Fix, Inst of Trunking/Conduiting (Mech RM)_PD-1 | 30d | 2012-02-26 | 2012-03-31 | PP3DM23003C0, PP3DM04001C0, PP3DM23002C0 | 143d | 30d | ELECTRICAL [96 h]; Cost |  |  | C04ME26001C0 | PP3DM26002C0 | PA | C | P3 | M1 | ME | 260 | 02 | PD | S | BILL 2 | B02 | S2 | 1F | R00 | ACF04 | PD-1 | 260 | 1S | MEP | M1F |  |  |
| PP3DM27001C0 |  | PA-P3 ; 1st Fix, Inst of Trunking for ELV system (Mech RM)_PD-1 | 30d | 2012-02-26 | 2012-03-31 | PP3DM23002C0 SS, PP3DM04001C0, PP3DM23002C0 | 113d | 0d | ELECTRICAL [267.6 h]; Cost |  |  | C04ME27010C0 | PP3DM27001C0 | PA | C | P3 | M1 | ME | 270 | 01 | PD | S | BILL 2 | B02 | S2 | 1F | R00 | ACF04 | PD-1 | 270 | 1S | MEP | M1F |  |  |
| PP3DM26003C0 |  | PA-P3 ; 2nd Fix, Cable Pulling (Mech RM)_PD-1 | 30d | 2012-04-01 | 2012-05-05 | PP3DM26001C0 | 113d | 0d | ELECTRICAL [2048.4 h]; Cost |  |  | C04ME26007C0 | PP3DM26003C0 | PA | C | P3 | M1 | ME | 260 | 03 | PD | S | BILL 2 | B02 | S2 | 2F | R00 | ACF07 | PD-1 | 260 | 2n | MEP |  |  |  |
| PP3DM27002C0 |  | PA-P3 ; 1st Fix, Wiring/ Cabling work (Mech RM)_PD-1 | 30d | 2012-04-01 | 2012-05-05 | PP3DM26001C0 SS, PP3DM26002C0 SS, PP3DM04001C0, PP3DM27001C0 | 113d | 0d | ELECTRICAL [38.4 h]; Cost |  |  | C04ME27001C0 | PP3DM27002C0 | PA | C | P3 | M1 | ME | 270 | 02 | PD | S | BILL 2 | B02 | S2 | 1F | R00 | ACF04 | PD-1 | 270 | 1S | MEP | M1F |  |  |
| PP3DM26005C0 |  | PA-P3 ; 2nd Fix, Wiring for Power/Lighting/Emergency (Mech RM)_PD-1 | 30d | 2012-05-06 | 2012-06-09 | PP3DM26001C0, PP3DM26002C0, PP3DM26003C0, PP3DM27001C0, PP3DM27002C0 | 113d | 0d | ELECTRICAL [38.4 h]; Cost |  |  | C04ME26005C0 | PP3DM26005C0 | PA | C | P3 | M1 | ME | 260 | 05 | PD | S | BILL 2 | B02 | S2 | 2F | R00 | ACF07 | PD-1 | 260 | 2n | MEP |  |  |  |
| PP3DM08102C0 |  | PA-P3 ; Metal Door Frames (Mech RM)_PD-1 | 7d | 2012-05-08 | 2012-05-16 | GNHE08101C0, PP3DM04001C0 SS+14d, PP3DM04001C0, PP3DM23004C0, PP2S103331C280, PP1DP09902C10 SS | 125.88d | 0d | METAL DOORS [44 h]; Cost | 316 | 1465 | C04ME08101C0 | PP3DM08102C0 | PA | C | P3 | M1 | DO | 081 | 02 | PD | S | BILL 2 | B02 | S2 | DF | R00 | ACF06 | PD-1 | 081 |  |  |  |  | 08 |
| PP3DM09601C0 |  | PA-P3 ; Floor Finishes (Mech RM)_PD-1 | 13.5d | 2012-05-08 | 2012-05-23 | PAFOA09201C1, PP3DM22001C0, PP3DM22003C0, PP3DM04001C0 SS+26d, PP3DM04001C0 FS+12d, PP3DM23004C0 FS+12d, PP2S103331C280, PP1DP09902C10 SS | 127.38d | 0d | ASSORTED FLOOR FINISH [1960 h]; ASSORTED FLOOR FINISH [1088.5 m2]; Cost | 326 | 1501 | C04ME09601C0 | PP3DM09601C0 | PA | C | P3 | M1 | FF | 096 | 01 | PD | S | BILL 2 | B02 | S2 | 01 | R00 | ACF06 | PD-1 | FF |  |  |  |  |  |
| PP3DM09901C0 |  | PA-P3 ; Wall - final Paint (Mech RM)_PD-1 | 6d | 2012-05-08 | 2012-05-15 | PP3DM09902C0, PP2S103331C280, PP3DM21104C0, PP1DP09902C10 SS | 152.88d | 144.88d | WALL PAINT [247 h]; WALL PAINT [306.5 m2]; Cost | 329 | 1470 | C04ME09903C0 | PP3DM09901C0 | PA | C | P3 | M1 | PA | 099 | 01 | PD | S | BILL 2 | B02 | S2 | 02 | R00 | ACF06 | PD-1 | 099 |  |  |  |  |  |
| PP3DM21106C0 |  | PA-P3 ; Final Fix, Inst of Fire Extinguishers/FHC (Mech RM)_PD-1 | 18d | 2012-05-08 | 2012-05-29 | PAFOA09201C1, PP3DM22001C0, PP3DM22003C0, PP3DM04001C0 SS+26d, PP3DM04001C0 FS+12d, PP3DM23004C0 FS+12d, PP2S103331C280, PP3DM21104C0, PP1DP09902C10 SS | 140.88d | 132.88d | MECHANICAL [1008 h]; Cost |  |  | C04ME21123C0 | PP3DM21106C0 | PA | C | P3 | M1 | ME | 211 | 06 | PD | S | BILL 2 | B02 | S2 | FF | R00 | ACF07 | PD-1 | 211 | FF | MEP |  |  |  |
| PP3DM21107C0 |  | PA-P3 ; Final Fix, Inst of Sprinklers head (Mech RM)_PD-1 | 18d | 2012-05-08 | 2012-05-29 | PP3DM21104C0, PP2S103331C280, PP3DM21104C0 FF, PP1DP09902C10 SS | 140.88d | 132.88d | MECHANICAL [698.4 h]; Cost |  |  | C04ME21121C0 | PP3DM21107C0 | PA | C | P3 | M1 | ME | 211 | 07 | PD | S | BILL 2 | B02 | S2 | FF | R00 | ACF07 | PD-1 | 211 | FF | MEP |  |  |  |
| PP3DM23009C0 |  | PA-P3 ; Final Fix, Inst of Flexible Duct & Plenum boxes (Mech RM)_PD-1 | 18d | 2012-05-08 | 2012-05-29 | PP3DM23007C0, PP3DM23008C0, PP2S103331C280, PP3DM21104C0, PP1DP09902C10 SS | 122.88d | 0d | MECHANICAL [16.8 h]; Cost |  |  | C04ME23023C0 | PP3DM23009C0 | PA | C | P3 | M1 | ME | 230 | 09 | PD | S | BILL 2 | B02 | S2 | FF | R00 | ACF07 | PD-1 | 230 | FF | MEP |  |  |  |
| PP3DM26006C0 |  | PA-P3 ; Final Fix, Inst of Ceiling rose (Mech RM)_PD-1 | 18d | 2012-05-08 | 2012-05-29 | PAFOA09201C1, PP3DM22001C0, PP3DM22003C0, PP3DM04001C0 SS+26d, PP3DM04001C0 FS+12d, PP3DM23004C0 FS+12d, PP2S103331C280, PP3DM21104C0, PP1DP09902C10 SS | 140.88d | 132.88d | ELECTRICAL [13.2 h]; Cost |  |  | C04ME26015C0 | PP3DM26006C0 | PA | C | P3 | M1 | ME | 260 | 06 | PD | S | BILL 2 | B02 | S2 | FF | R00 | ACF07 | PD-1 | 260 | FF | MEP |  |  |  |
| PP3DM26007C0 |  | PA-P3 ; Final Fix, Inst of Light fittings (Mech RM)_PD-1 | 18d | 2012-05-08 | 2012-05-29 | PP3DM09902C0, PP2S103331C280, PP3DM21104C0, PP1DP09902C10 SS | 140.88d | 132.88d | ELECTRICAL [1562.4 h]; Cost |  |  | C04ME26019C0 | PP3DM26007C0 | PA | C | P3 | M1 | ME | 260 | 07 | PD | S | BILL 2 | B02 | S2 | FF | R00 | ACF07 | PD-1 | 260 | FF | MEP |  |  |  |
| PP3DM26008C0 |  | PA-P3 ; Final Fix, Inst of Switch/Sockets (Mech RM)_PD-1 | 18d | 2012-05-08 | 2012-05-29 | PP3DM09902C0, PP2S103331C280, PP3DM21104C0, PP1DP09902C10 SS | 140.88d | 132.88d | ELECTRICAL [62.4 h]; Cost |  |  | C04ME26017C0 | PP3DM26008C0 | PA | C | P3 | M1 | ME | 260 | 08 | PD | S | BILL 2 | B02 | S2 | FF | R00 | ACF07 | PD-1 | 260 | FF | MEP |  |  |  |
| PP3DM27004C0 |  | PA-P3 ; Final Fix, BMS connection work to Equipment (Mech RM)_PD-1 | 18d | 2012-05-08 | 2012-05-29 | PP3DM21105C0, PP3DM23004C0, PP3DM23005C0, PP3DM23007C0, PP3DM26004C0, PP3DM27002C0, PP3DM27003C0, PP2S103331C280, PP3DM21104C0, PP1DP09902C10 SS | 140.88d | 132.88d | ELECTRICAL [1167.6 h]; Cost |  |  | C04ME27003C0 | PP3DM27004C0 | PA | C | P3 | M1 | ME | 270 | 04 | PD | S | BILL 2 | B02 | S2 | FF | R00 | ACF07 | PD-1 | 270 | FF | MEP |  |  |  |
| PP3DM27005C0 |  | PA-P3 ; Final Fix, Inst of ELV device (Detector/Speaker) (Mech RM)_PD-1 | 18d | 2012-05-08 | 2012-05-29 | PP3DM09902C0, PP3DM23006C0, PP3DM27003C0, PP2S103331C280, PP3DM21104C0, PP1DP09902C10 SS | 140.88d | 132.88d | ELECTRICAL [39.6 h]; Cost |  |  | C04ME27030C0 | PP3DM27005C0 | PA | C | P3 | M1 | ME | 270 | 05 | PD | S | BILL 2 | B02 | S2 | FF | R00 | ACF07 | PD-1 | 270 | FF | MEP |  |  |  |
| PP3DM08103C0 |  | PA-P3 ; Metal Doors (Mech RM)_PD-1 | 7d | 2012-05-16 | 2012-05-24 | PP3DM08102C0, PP2S103331C280, PP3DM21104C0, PP1DP09902C10 SS | 125.88d | 0d | METAL DOORS [40 h]; METAL DOORS [4 no]; Cost | 317 | 1466 | C04ME08105C0 | PP3DM08103C0 | PA | C | P3 | M1 | DO | 081 | 03 | PD | S | BILL 2 | B02 | S2 | DR | R00 | ACF06 | PD-1 | 081 |  |  |  |  | 08 |
| PP3DM22004C0 |  | PA-P3 ; Final Fix, Inst of All drain (Mech RM)_PD-1 | 18d | 2012-05-23 | 2012-06-13 | PP3DM09601C0, PP2S103331C280, PP3DM21104C0, PP1DP09902C10 SS | 127.38d | 119.38d | PLUMBING [1078.8 h]; Cost |  |  | C04ME22003C0 | PP3DM22004C0 | PA | C | P3 | M1 | ME | 220 | 04 | PD | S | BILL 2 | B02 | S2 | FF | R00 | ACF07 | PD-1 | 220 | FF | MEP |  |  |  |
| PP3DM08101C0 |  | PA-P3 ; Al / Glass doors (Mech RM)_PD-1 | 10d | 2012-05-24 | 2012-06-05 | PP3DM08103C0, PP2S103331C280, PP1DP09902C10 SS | 125.88d | 0d | ASSORTED DOORS [60 h]; ASSORTED DOORS [6 no]; Cost |  |  | C04ME08109C0 | PP3DM08101C0 | PA | C | P3 | M1 | DO | 081 | 01 | PD | S | BILL 2 | B02 | S2 | 03 | R00 | ACF06 | PD-1 | 081 |  |  |  |  |  |
| PP3DM23010C0 |  | PA-P3 ; Final Fix, Inst of Grilles & Diffusers (Mech RM)_PD-1 | 18d | 2012-05-29 | 2012-06-20 | PP3DM23009C0, PP2S103331C280, PP3DM21104C0, PP1DP09902C10 SS | 122.88d | 114.88d | MECHANICAL [248.4 h]; Cost |  |  | C04ME23021C0 | PP3DM23010C0 | PA | C | P3 | M1 | ME | 230 | 10 | PD | S | BILL 2 | B02 | S2 | FF | R00 | ACF07 | PD-1 | 230 | FF | MEP |  |  |  |
| PP3DM08701C0 |  | PA-P3 ; Ironmongery (Mech RM)_PD-1 | 9d | 2012-06-05 | 2012-06-17 | PP3DM08101C0, PP3DM08103C0, PP2S103331C280, PP1DP09902C10 SS | 125.88d | 117.88d | IRONMONGERY [40 h]; IRONMONGERY [4 no]; Cost | 322 | 1467 | C04ME08709C0 | PP3DM08701C0 | PA | C | P3 | M1 | DO | 087 | 01 | PD | S | BILL 2 | B02 | S2 | IM | R00 | ACF06 | PD-1 | 087 |  |  |  |  | 08 |
| PP3DM26009C0 |  | PA-P3 ; Final Fix, Termination & Gladding of Cables (Mech RM)_PD-1 | 18d | 2012-06-10 | 2012-07-01 | PP3DM26005C0, PAFOA09201C1, PP3DM22001C0, PP3DM22003C0, PP3DM04001C0 SS+26d, PP3DM04001C0 FS+12d, PP3DM23004C0 FS+12d, PP2S103331C280, PP3DM21104C0, PP1DP09902C10 SS | 113d | 105d | ELECTRICAL [256.8 h]; Cost |  |  | C04ME26013C0 | PP3DM26009C0 | PA | C | P3 | M1 | ME | 260 | 09 | PD | S | BILL 2 | B02 | S2 | FF | R00 | ACF07 | PD-1 | 260 | FF | MEP |  |  |  |

| ID | WBS | Activity | Duration | Start | Finish | Predecessors | Total float | Free float | Resources | Change Order # | NEW ACTIVITY ID | change id | IDDD | CCAD BUILDING(SET) | CCAD PHASE(SET) | CCAD FLOOR(SET) | CCAD ZONE(SET) | CCAD WORK(SET) | CCAD SECTION(SET) | CCAD SERIAL No.(SET) | CCAD Carpark code(SET) | CCAD Carpark district code(set) | CCAD CBS(SET) | CCAD BILL(SET) | CCAD HANDOVER(SET) | CCAD TAG(SET) | CCAD REV(SET) | CCADACF (SET) | FSP CODE | CCAD SSCF | CCAD SUB ZONE MEP(SET) | CCAD CSA | Act Selector % | CCAD MEQ | CCAD DIVISION(SET) |
| --- | --- | --- | --- | --- | --- | --- | --- | --- | --- | --- | --- | --- | --- | --- | --- | --- | --- | --- | --- | --- | --- | --- | --- | --- | --- | --- | --- | --- | --- | --- | --- | --- | --- | --- | --- |
|  | DM2 | **MECHANICAL ROOMS (2 NOS.) ; Zone PD-2** |  | 2012-05-26 | 2012-12-30 |  |  |  |  |  |  |  |  |  |  |  |  |  |  |  |  |  |  |  |  |  |  |  |  |  |  |  |  |  |  |
| PP3DM09902C10 |  | PA-P3 ; Wall Prime & 1st coat (Mech RM)_PD-2 | 18d | 2012-05-26 | 2012-06-17 | PAFOA09201C1, PGLS403392C0, PGLS503391C0, PGLS503392C0 SS | 13.2d | 0d | WALL PAINT [457 h]; WALL PAINT [569 m2]; Cost | 328 | 1469 | C04ME09901C0 | PP3DM09902C0 | PA | C | P3 | M1 | PA | 099 | 02 | PD | S | BILL 2 | B02 | S2 | 01 | R00 | ACF06 | PD-2 | 099 |  |  |  |  |  |
| PP3DM04001C10 |  | PA-P3 ; Block Wall Works (Mech RM)_PD-2 | 30d | 2012-06-17 | 2012-07-22 | PP3DM09902C10 | 13.2d | 0d | BLOCKWORKS [485 h]; BLOCKWORKS [138.5 m2]; Cost |  |  | AP3M104001C0 | PP3DM04001C0 | PA | C | P3 | M1 | BL | 040 | 01 | PD | S | BILL 2 | B02 | S2 | BL | R00 | ACF06 | PD-2 | 040 |  |  |  |  |  |
| PP3DM23003C10 |  | PA-P3 ; 1st Fix, Inst. of Supports for MEP (Mech RM)_PD-2 | 12d | 2012-07-22 | 2012-08-05 | PP3DM04001C10 | 13.2d | 0d | MECHANICAL [313.2 h]; Cost |  |  | C04ME23001C0 | PP3DM23003C0 | PA | C | P3 | M1 | ME | 230 | 03 | PD | S | BILL 2 | B02 | S2 | 1F | R00 | ACF04 | PD-2 | 230 | 1S | MEP | M1F |  |  |
| PP3DM21102C10 |  | PA-P3 ; 1st Fix, Inst of Sprinkler main pipe (Mech RM)_PD-2 | 24d | 2012-08-05 | 2012-09-04 | PP3DM23003C10, PP3DM04001C10 | 13.2d | 0d | MECHANICAL [4911.6 h]; Cost |  |  | C04ME21111C0 | PP3DM21102C0 | PA | C | P3 | M1 | ME | 211 | 02 | PD | S | BILL 2 | B02 | S2 | 1F | R00 | ACF04 | PD-2 | 211 | 1S | MEP | M1F |  |  |
| PP3DM23001C10 |  | PA-P3 ; 1st Fix, Inst of CHW pipe (Mech RM)_PD-2 | 24d | 2012-08-05 | 2012-09-04 | PP3DM21102C10 SS, PP3DM23003C10, PP3DM04001C10 | 49.2d | 24d | MECHANICAL [1549.2 h]; Cost |  |  | C04ME23019C0 | PP3DM23001C0 | PA | C | P3 | M1 | ME | 230 | 01 | PD | S | BILL 2 | B02 | S2 | 1F | R00 | ACF04 | PD-2 | 230 | 1S | MEP | M1F |  |  |
| PP3DM21101C10 |  | PA-P3 ; 1st Fix, Inst of Sprinkler branch pipe (Mech RM)_PD-2 | 24d | 2012-09-04 | 2012-10-02 | PP3DM21102C10 SS, PP3DM04001C10, PP3DM21102C10 | 43.2d | 24d | MECHANICAL [4038 h]; Cost |  |  | C04ME21119C0 | PP3DM21101C0 | PA | C | P3 | M1 | ME | 211 | 01 | PD | S | BILL 2 | B02 | S2 | 1F | R00 | ACF04 | PD-2 | 211 | 1S | MEP | M1F |  |  |
| PP3DM23002C10 |  | PA-P3 ; 1st Fix, Inst of Ducting (Mech RM)_PD-2 | 24d | 2012-09-04 | 2012-10-02 | PP3DM23003C10, PP3DM04001C10, PP3DM21102C10 | 13.2d | 0d | MECHANICAL [1974 h]; Cost |  |  | C04ME23005C0 | PP3DM23002C0 | PA | C | P3 | M1 | ME | 230 | 02 | PD | S | BILL 2 | B02 | S2 | 1F | R00 | ACF04 | PD-2 | 230 | 1S | MEP | M1F |  |  |
| PP3DM22001C10 |  | PA-P3 ; 1st Fix, Inst of Drainage pipe (Mech RM)_PD-2 | 24d | 2012-10-02 | 2012-11-01 | PP3DM23003C10, PP3DM26002C10 SS, PP3DM04001C10 | 13.2d | 0d | PLUMBING [1078.8 h]; Cost |  |  | C04ME22011C0 | PP3DM22001C0 | PA | C | P3 | M1 | ME | 220 | 01 | PD | S | BILL 2 | B02 | S2 | 1F | R00 | ACF04 | PD-2 | 220 | 1S | MEP | M1F |  |  |
| PP3DM22003C10 |  | PA-P3 ; 1st Fix, Inst of Water supply pipe (Mech RM)_PD-2 | 24d | 2012-10-02 | 2012-11-01 | PP3DM22001C10 SS, PP3DM23003C10, PP3DM04001C10 | 13.2d | 0d | PLUMBING [3042 h]; Cost |  |  | C04ME22006C0 | PP3DM22003C0 | PA | C | P3 | M1 | ME | 220 | 03 | PD | S | BILL 2 | B02 | S2 | 1F | R00 | ACF04 | PD-2 | 220 | 1S | MEP | M1F |  |  |
| PP3DM23004C10 |  | PA-P3 ; 2nd Fix, Inst of Equipment (AHU) (Mech RM)_PD-2 | 24d | 2012-10-02 | 2012-11-01 | PP3DM04001C10, PP3DM22001C10 FF, PP3DM22003C10 FF | 13.2d | 0d | MECHANICAL [264 h]; Cost |  |  | C04ME23013C0 | PP3DM23004C0 | PA | C | P3 | M1 | ME | 230 | 04 | PD | S | BILL 2 | B02 | S2 | 2F | R00 | ACF04 | PD-2 | 230 | 2n | MEP |  | H |  |
| PP3DM23007C10 |  | PA-P3 ; 2nd Fix, Inst of VCD's/FD's (Mech RM)_PD-2 | 24d | 2012-10-02 | 2012-11-01 | PP3DM23002C10 | 25.2d | 0d | MECHANICAL [584.4 h]; Cost |  |  | C04ME23015C0 | PP3DM23007C0 | PA | C | P3 | M1 | ME | 230 | 07 | PD | S | BILL 2 | B02 | S2 | 2F | R00 | ACF07 | PD-2 | 230 | 2n | MEP |  |  |  |
| PP3DM23008C10 |  | PA-P3 ; 2nd Fix, Insulation of CHW pipe & Duct (Mech RM)_PD-2 | 24d | 2012-10-02 | 2012-11-01 | PP3DM23001C10, PP3DM23002C10 | 25.2d | 0d | MECHANICAL [1851.6 h]; Cost |  |  | C04ME23017C0 | PP3DM23008C0 | PA | C | P3 | M1 | ME | 230 | 08 | PD | S | BILL 2 | B02 | S2 | 2F | R00 | ACF07 | PD-2 | 230 | 2n | MEP |  |  |  |
| PP3DM26001C10 |  | PA-P3 ; 1st Fix, Inst of Cable Tray (Mech RM)_PD-2 | 24d | 2012-10-02 | 2012-11-01 | PP3DM04001C10, PP3DM23002C10 | 16.2d | 0d | ELECTRICAL [32.4 h]; Cost |  |  | C04ME26011C0 | PP3DM26001C0 | PA | C | P3 | M1 | ME | 260 | 01 | PD | S | BILL 2 | B02 | S2 | 1F | R00 | ACF04 | PD-2 | 260 | 1S | MEP | M1F |  |  |
| PP3DM26002C10 |  | PA-P3 ; 1st Fix, Inst of Trunking/Conduiting (Mech RM)_PD-2 | 24d | 2012-10-02 | 2012-11-01 | PP3DM23003C10, PP3DM04001C10, PP3DM23002C10 | 13.2d | 0d | ELECTRICAL [96 h]; Cost |  |  | C04ME26001C0 | PP3DM26002C0 | PA | C | P3 | M1 | ME | 260 | 02 | PD | S | BILL 2 | B02 | S2 | 1F | R00 | ACF04 | PD-2 | 260 | 1S | MEP | M1F |  |  |
| PP3DM27001C10 |  | PA-P3 ; 1st Fix, Inst of Trunking for ELV system (Mech RM)_PD-2 | 24d | 2012-10-02 | 2012-11-01 | PP3DM23002C10 SS, PP3DM04001C10, PP3DM23002C10 | 16.2d | 0d | ELECTRICAL [267.6 h]; Cost |  |  | C04ME27010C0 | PP3DM27001C0 | PA | C | P3 | M1 | ME | 270 | 01 | PD | S | BILL 2 | B02 | S2 | 1F | R00 | ACF04 | PD-2 | 270 | 1S | MEP | M1F |  |  |
| PP3DM08102C10 |  | PA-P3 ; Metal Door Frames (Mech RM)_PD-2 | 6.88d | 2012-11-01 | 2012-11-10 | GNHE08101C0, PP3DM04001C10 SS+14d, PP3DM04001C10, PP3DM23004C10 | 28.2d | 12d | METAL DOORS [44 h]; Cost | 316 | 1465 | C04ME08101C0 | PP3DM08102C0 | PA | C | P3 | M1 | DO | 081 | 02 | PD | S | BILL 2 | B02 | S2 | DF | R00 | ACF06 | PD-2 | 081 |  |  |  |  | 08 |
| PP3DM21104C10 |  | PA-P3 ; 2nd Fix, Inst of Sprinkler droppers (Mech RM)_PD-2 | 24d | 2012-11-01 | 2012-12-01 | PP3DM21101C10, PAFOA09201C1, PP3DM22001C10, PP3DM22003C10, PP3DM04001C10 | 19.2d | 0d | MECHANICAL [1599.6 h]; Cost |  |  | C04ME21115C0 | PP3DM21104C0 | PA | C | P3 | M1 | ME | 211 | 04 | PD | S | BILL 2 | B02 | S2 | 2F | R00 | ACF07 | PD-2 | 211 | 2n | MEP |  |  |  |
| PP3DM21105C10 |  | PA-P3 ; 2nd Fix, Inst of Zone Control Valve (Mech RM)_PD-2 | 24d | 2012-11-01 | 2012-12-01 | PP3DM23001C10, PP3DM23004C10 | 19.2d | 0d | MECHANICAL [463.2 h]; Cost |  |  | C04ME21117C0 | PP3DM21105C0 | PA | C | P3 | M1 | ME | 211 | 05 | PD | S | BILL 2 | B02 | S2 | 2F | R00 | ACF07 | PD-2 | 211 | 2n | MEP |  |  |  |
| PP3DM23005C10 |  | PA-P3 ; 2nd Fix, Inst of Equipment (FCU,FAN,PUMP) (Mech RM)_PD-2 | 24d | 2012-11-01 | 2012-12-01 | PP3DM23004C10 | 16.2d | 0d | MECHANICAL [1123.2 h]; Cost |  |  | C04ME23011C0 | PP3DM23005C0 | PA | C | P3 | M1 | ME | 230 | 05 | PD | S | BILL 2 | B02 | S2 | 2F | R00 | ACF04 | PD-2 | 230 | 2n | MEP |  | H |  |
| PP3DM23009C10 |  | PA-P3 ; 2nd Fix, Inst of Flexible Duct & Plenum boxes (Mech RM)_PD-2 | 18d | 2012-11-01 | 2012-11-24 | PP3DM23007C10, PP3DM23008C10, PGLS103331C290, PGLS103331C300, PGLS403392C20, PGLS503392C10 | 25.2d | 0d | MECHANICAL [16.8 h]; Cost |  |  | C04ME23023C0 | PP3DM23009C0 | PA | C | P3 | M1 | ME | 230 | 09 | PD | S | BILL 2 | B02 | S2 | FF | R00 | ACF07 | PD-2 | 230 | FF | MEP |  |  |  |
| PP3DM26003C10 |  | PA-P3 ; 2nd Fix, Cable Pulling (Mech RM)_PD-2 | 24d | 2012-11-01 | 2012-12-01 | PP3DM26001C10 | 16.2d | 0d | ELECTRICAL [2048.4 h]; Cost |  |  | C04ME26007C0 | PP3DM26003C0 | PA | C | P3 | M1 | ME | 260 | 03 | PD | S | BILL 2 | B02 | S2 | 2F | R00 | ACF07 | PD-2 | 260 | 2n | MEP |  |  |  |
| PP3DM26004C10 |  | PA-P3 ; 2nd Fix, Inst of Equipment (DB, TR, SG) (Mech RM)_PD-2 | 24d | 2012-11-01 | 2012-12-01 | PP3DM23004C10 | 37.2d | 18d | ELECTRICAL [596.4 h]; Cost |  |  | C04ME26009C0 | PP3DM26004C0 | PA | C | P3 | M1 | ME | 260 | 04 | PD | S | BILL 2 | B02 | S2 | 2F | R00 | ACF04 | PD-2 | 260 | 2n | MEP |  | E |  |
| PP3DM27002C10 |  | PA-P3 ; 1st Fix, Wiring/ Cabling work (Mech RM)_PD-2 | 24d | 2012-11-01 | 2012-12-01 | PP3DM26001C10 SS, PP3DM26002C10 SS, PP3DM27001C10 SS, PP3DM04001C10, PP3DM27001C10 | 16.2d | 0d | ELECTRICAL [38.4 h]; Cost |  |  | C04ME27001C0 | PP3DM27002C0 | PA | C | P3 | M1 | ME | 270 | 02 | PD | S | BILL 2 | B02 | S2 | 1F | R00 | ACF04 | PD-2 | 270 | 1S | MEP | M1F |  |  |
| PP3DM27003C10 |  | PA-P3 ; 2nd Fix, Inst of ELV Equipment (Panels) (Mech RM)_PD-2 | 24d | 2012-11-01 | 2012-12-01 | PP3DM23004C10 | 28.2d | 12d | ELECTRICAL [92.4 h]; Cost |  |  | C04ME27020C0 | PP3DM27003C0 | PA | C | P3 | M1 | ME | 270 | 03 | PD | S | BILL 2 | B02 | S2 | 2F | R00 | ACF04 | PD-2 | 270 | 2n | MEP |  | E |  |
| PP3DM09601C10 |  | PA-P3 ; Floor Finishes (Mech RM)_PD-2 | 14d | 2012-11-17 | 2012-12-04 | PAFOA09201C1, PP3DM22001C10, PP3DM22003C10, PP3DM04001C10 SS+26d, PP3DM04001C10 FS+12d, PP3DM23004C10 FS+12d, PGLS103331C290, PGLS103331C300, PGLS403392C20, PGLS503392C10, PP3DP21113C20 SS | 16.2d | 0d | ASSORTED FLOOR FINISH [1960 h]; ASSORTED FLOOR FINISH [1088.5 m2]; Cost | 326 | 1501 | C04ME09601C0 | PP3DM09601C0 | PA | C | P3 | M1 | FF | 096 | 01 | PD | S | BILL 2 | B02 | S2 | 01 | R00 | ACF06 | PD-2 | FF |  |  |  |  |  |
| PP3DM21106C10 |  | PA-P3 ; Final Fix, Inst of Fire Extinguishers/FHC (Mech RM)_PD-2 | 18d | 2012-11-17 | 2012-12-09 | PAFOA09201C1, PP3DM22001C10, PP3DM22003C10, PP3DM04001C10 SS+26d, PP3DM04001C10 FS+12d, PP3DM23004C10 FS+12d, PGLS103331C290, PGLS103331C300, PGLS403392C20, PGLS503392C10, PP3DP21113C20 SS | 31.2d | 19.12d | MECHANICAL [1008 h]; Cost |  |  | C04ME21123C0 | PP3DM21106C0 | PA | C | P3 | M1 | ME | 211 | 06 | PD | S | BILL 2 | B02 | S2 | FF | R00 | ACF07 | PD-2 | 211 | FF | MEP |  |  |  |
| PP3DM26006C10 |  | PA-P3 ; Final Fix, Inst of Ceiling rose (Mech RM)_PD-2 | 18d | 2012-11-17 | 2012-12-09 | PAFOA09201C1, PP3DM22001C10, PP3DM22003C10, PP3DM04001C10 SS+26d, PP3DM04001C10 FS+12d, PP3DM23004C10 FS+12d, PGLS103331C290, PGLS103331C300, PGLS403392C20, PGLS503392C10, PP3DP21113C20 SS | 13.2d | 0d | ELECTRICAL [13.2 h]; Cost |  |  | C04ME26015C0 | PP3DM26006C0 | PA | C | P3 | M1 | ME | 260 | 06 | PD | S | BILL 2 | B02 | S2 | FF | R00 | ACF07 | PD-2 | 260 | FF | MEP |  |  |  |
| PP3DM23010C10 |  | PA-P3 ; Final Fix, Inst of Grilles & Diffusers (Mech RM)_PD-2 | 18d | 2012-11-24 | 2012-12-16 | PP3DM23009C10, PGLS103331C290, PGLS103331C300, PGLS403392C20, PGLS503392C10, PP3DM26006C10 FF, PP3DP21113C20 SS | 25.2d | 13.12d | MECHANICAL [248.4 h]; Cost |  |  | C04ME23021C0 | PP3DM23010C0 | PA | C | P3 | M1 | ME | 230 | 10 | PD | S | BILL 2 | B02 | S2 | FF | R00 | ACF07 | PD-2 | 230 | FF | MEP |  |  |  |
| PP3DM08103C10 |  | PA-P3 ; Metal Doors (Mech RM)_PD-2 | 7.12d | 2012-11-25 | 2012-12-04 | PP3DM08102C10, PGLS103331C290, PGLS103331C300, PGLS403392C20, PGLS503392C10, PP3DM09601C10 FF, PP3DP21113C20 SS | 16.2d | 0d | METAL DOORS [40 h]; METAL DOORS [4 no]; Cost | 317 | 1466 | C04ME08105C0 | PP3DM08103C0 | PA | C | P3 | M1 | DO | 081 | 03 | PD | S | BILL 2 | B02 | S2 | DR | R00 | ACF06 | PD-2 | 081 |  |  |  |  | 08 |
| PP3DM21107C10 |  | PA-P3 ; Final Fix, Inst of Sprinklers head (Mech RM)_PD-2 | 18d | 2012-12-01 | 2012-12-23 | PP3DM21104C10, PGLS103331C290, PGLS103331C300, PGLS403392C20, PGLS503392C10, PP3DM26006C10 FF, PP3DP21113C20 SS | 19.2d | 7.12d | MECHANICAL [698.4 h]; Cost |  |  | C04ME21121C0 | PP3DM21107C0 | PA | C | P3 | M1 | ME | 211 | 07 | PD | S | BILL 2 | B02 | S2 | FF | R00 | ACF07 | PD-2 | 211 | FF | MEP |  |  |  |
| PP3DM23006C10 |  | PA-P3 ; 2nd Fix, Inst of VAV'S CHW connection (Mech RM)_PD-2 | 12d | 2012-12-01 | 2012-12-16 | PP3DM23005C10 | 16.2d | 0d | MECHANICAL [25.2 h]; Cost |  |  | C04ME23009C0 | PP3DM23006C0 | PA | C | P3 | M1 | ME | 230 | 06 | PD | S | BILL 2 | B02 | S2 | 2F | R00 | ACF07 | PD-2 | 230 | 2n | MEP |  |  |  |
| PP3DM26005C10 |  | PA-P3 ; 2nd Fix, Wiring for Power/Lighting/Emergency (Mech RM)_PD-2 | 12d | 2012-12-01 | 2012-12-16 | PP3DM26001C10, PP3DM26002C10, PP3DM26003C10, PP3DM27001C10, PP3DM27002C10 | 16.2d | 0d | ELECTRICAL [38.4 h]; Cost |  |  | C04ME26005C0 | PP3DM26005C0 | PA | C | P3 | M1 | ME | 260 | 05 | PD | S | BILL 2 | B02 | S2 | 2F | R00 | ACF07 | PD-2 | 260 | 2n | MEP |  |  |  |
| PP3DM27004C10 |  | PA-P3 ; Final Fix, BMS connection work to Equipment (Mech RM)_PD-2 | 18d | 2012-12-01 | 2012-12-23 | PP3DM23004C10, PP3DM23005C10 FF, PP3DM23007C10, PP3DM26004C10 FF, PP3DM27002C10, PP3DM27003C10 FF, PGLS103331C290, PGLS103331C300, PGLS403392C20, PGLS503392C10, PP3DP21113C20 SS, PP3DM21105C10 | 19.2d | 7.12d | ELECTRICAL [1167.6 h]; Cost |  |  | C04ME27003C0 | PP3DM27004C0 | PA | C | P3 | M1 | ME | 270 | 04 | PD | S | BILL 2 | B02 | S2 | FF | R00 | ACF07 | PD-2 | 270 | FF | MEP |  |  |  |
| PP3DM08101C10 |  | PA-P3 ; Al / Glass doors (Mech RM)_PD-2 | 10d | 2012-12-04 | 2012-12-16 | PP3DM08103C10, PGLS103331C290, PGLS103331C300, PP3DP21113C20 SS | 16.2d | 0d | ASSORTED DOORS [60 h]; ASSORTED DOORS [6 no]; Cost |  |  | C04ME08109C0 | PP3DM08101C0 | PA | C | P3 | M1 | DO | 081 | 01 | PD | S | BILL 2 | B02 | S2 | 03 | R00 | ACF06 | PD-2 | 081 |  |  |  |  |  |
| PP3DM22004C10 |  | PA-P3 ; Final Fix, Inst of All drain (Mech RM)_PD-2 | 18d | 2012-12-04 | 2012-12-25 | PP3DM09601C10, PGLS103331C290, PGLS103331C300, PGLS403392C20, PGLS503392C10, PP3DP21113C20 SS | 17.2d | 5.12d | PLUMBING [1078.8 h]; Cost |  |  | C04ME22003C0 | PP3DM22004C0 | PA | C | P3 | M1 | ME | 220 | 04 | PD | S | BILL 2 | B02 | S2 | FF | R00 | ACF07 | PD-2 | 220 | FF | MEP |  |  |  |
| PP3DM09901C10 |  | PA-P3 ; Wall - final Paint (Mech RM)_PD-2 | 7d | 2012-12-09 | 2012-12-17 | PP3DM09902C10, PGLS103331C290, PGLS103331C300, PGLS403392C20, PGLS503392C10, PP3DM26006C10, PP3DP21113C20 SS | 24.2d | 12.12d | WALL PAINT [247 h]; WALL PAINT [306.5 m2]; Cost | 329 | 1470 | C04ME09903C0 | PP3DM09901C0 | PA | C | P3 | M1 | PA | 099 | 01 | PD | S | BILL 2 | B02 | S2 | 02 | R00 | ACF06 | PD-2 | 099 |  |  |  |  |  |
| PP3DM26007C10 |  | PA-P3 ; Final Fix, Inst of Light fittings (Mech RM)_PD-2 | 18d | 2012-12-09 | 2012-12-30 | PP3DM09902C10, PGLS103331C290, PGLS103331C300, PGLS403392C20, PGLS503392C10, PP3DM26006C10, PP3DP21113C20 SS | 13.2d | 1.12d | ELECTRICAL [1562.4 h]; Cost |  |  | C04ME26019C0 | PP3DM26007C0 | PA | C | P3 | M1 | ME | 260 | 07 | PD | S | BILL 2 | B02 | S2 | FF | R00 | ACF07 | PD-2 | 260 | FF | MEP |  |  |  |
| PP3DM26008C10 |  | PA-P3 ; Final Fix, Inst of Switch/Sockets (Mech RM)_PD-2 | 18d | 2012-12-09 | 2012-12-30 | PP3DM09902C10, PGLS103331C290, PGLS103331C300, PGLS403392C20, PGLS503392C10, PP3DM26006C10, PP3DP21113C20 SS | 13.2d | 1.12d | ELECTRICAL [62.4 h]; Cost |  |  | C04ME26017C0 | PP3DM26008C0 | PA | C | P3 | M1 | ME | 260 | 08 | PD | S | BILL 2 | B02 | S2 | FF | R00 | ACF07 | PD-2 | 260 | FF | MEP |  |  |  |
| PP3DM08701C10 |  | PA-P3 ; Ironmongery (Mech RM)_PD-2 | 9d | 2012-12-16 | 2012-12-26 | PP3DM08101C10, PP3DM08103C10, PGLS103331C290, PGLS103331C300, PGLS403392C20, PGLS503392C10, PP3DP21113C20 SS | 16.2d | 4.12d | IRONMONGERY [40 h]; IRONMONGERY [4 no]; Cost | 322 | 1467 | C04ME08709C0 | PP3DM08701C0 | PA | C | P3 | M1 | DO | 087 | 01 | PD | S | BILL 2 | B02 | S2 | IM | R00 | ACF06 | PD-2 | 087 |  |  |  |  | 08 |
| PP3DM26009C10 |  | PA-P3 ; Final Fix, Termination & Gladding of Cables (Mech RM)_PD-2 | 9d | 2012-12-16 | 2012-12-26 | PP3DM26005C10, PAFOA09201C1, PP3DM22001C10, PP3DM22003C10, PP3DM04001C10 SS+26d, PP3DM04001C10 FS+12d, PP3DM23004C10 FS+12d, PGLS103331C290, PGLS103331C300, PGLS403392C20, PGLS503392C10, PP3DP21113C20 SS | 16.2d | 4.12d | ELECTRICAL [256.8 h]; Cost |  |  | C04ME26013C0 | PP3DM26009C0 | PA | C | P3 | M1 | ME | 260 | 09 | PD | S | BILL 2 | B02 | S2 | FF | R00 | ACF07 | PD-2 | 260 | FF | MEP |  |  |  |
| PP3DM27005C10 |  | PA-P3 ; Final Fix, Inst of ELV device (Detector/Speaker) (Mech RM)_PD-2 | 9d | 2012-12-16 | 2012-12-26 | PP3DM09902C10, PP3DM23006C10, PP3DM27003C10, PGLS103331C290, PGLS103331C300, PGLS403392C20, PGLS503392C10, PP3DP21113C20 SS | 16.2d | 4.12d | ELECTRICAL [39.6 h]; Cost |  |  | C04ME27030C0 | PP3DM27005C0 | PA | C | P3 | M1 | ME | 270 | 05 | PD | S | BILL 2 | B02 | S2 | FF | R00 | ACF07 | PD-2 | 270 | FF | MEP |  |  |  |

| ID | WBS | Activity | Duration | Start | Finish | Predecessors | Complete | Remaining | Planned start | Planned finish | Total float | Free float | Resources | Cost | Actual cost | change id | IDDD | July2011 Target% Complete | Claimed This Month | P_811 | P_711 | CCAD BUILDING(SET) | CCAD PHASE(SET) | CCAD FLOOR(SET) | CCAD ZONE(SET) | CCAD WORK(SET) | CCAD SECTION(SET) | CCAD SERIAL No.(SET) | CCAD SUB ZONE MEP(SET) | CCAD Carpark code(SET) | CCAD Carpark district code(set) | CCAD CBS(SET) | CCAD BILL(SET) | CCAD HANDOVER(SET) | CCAD TAG(SET) | CCAD REV(SET) | CCADACF (SET) | FSP CODE | CCAD CSA | CCAD SSCF | Act Selector % | user_number8 | user_integer1 | user_integer2 | user_number7 | Change Order # | NEW ACTIVITY ID |
| --- | --- | --- | --- | --- | --- | --- | --- | --- | --- | --- | --- | --- | --- | --- | --- | --- | --- | --- | --- | --- | --- | --- | --- | --- | --- | --- | --- | --- | --- | --- | --- | --- | --- | --- | --- | --- | --- | --- | --- | --- | --- | --- | --- | --- | --- | --- | --- |
|  | EP1 | **PARKING AREA ; Zone PE-1** |  | 2011-06-11 | 2012-09-25 |  |  |  |  |  |  |  |  |  |  |  |  |  |  |  |  |  |  |  |  |  |  |  |  |  |  |  |  |  |  |  |  |  |  |  |  |  |  |  |  |  |  |
| PP3EP22015C10 |  | PA-P3 ; 1st Fix, Plumbing / Drainage System (Parking Area)_PE-1 | 8d | 2011-06-11 A | 2011-08-30 A | PP3EP21114C10 SS+14d, PP3EP26012C10, PP3EP09901C10 | 100% |  | 2011-08-11 | 2011-08-21 |  |  | PLUMBING [646.8 h]; Cost [39247.8 AED] | 39,247.83 | 39,247.83 | CP3PA22001C0 | PP3EP22015C0 | 80 | 12287.23 | 100 | 75 | PA | C | P3 | PK | ME | 220 | 15 | 1S | PE | S | BILL 2 | B02 | S2 | 1F | R00 | ACF04 | PE-1 | MEP | 220 | M1F |  |  |  |  |  |  |
| PP3EP21114C10 |  | PA-P3 ; 1st Fix, Fire Fighting system (Parking Area)_PE-1 | 12d | 2011-06-15 A | 2011-08-30 A | PGLS103391C30, PP3EP09901C10 | 100% |  | 2011-07-07 | 2011-07-20 |  |  | MECHANICAL [316.8 h]; Cost [14636.1 AED] | 14,636.14 | 14,636.14 | CP3PA21109C0 | PP3EP21114C0 | 80 | 8084.98 | 100 | 75 | PA | C | P3 | PK | ME | 211 | 14 | 1S | PE | S | BILL 2 | B02 | S2 | 1F | R00 | ACF04 | PE-1 | MEP | 211 | M1F |  |  |  |  |  |  |
| PP3EP23011C10 |  | PA-P3 ; 1st Fix, CHW / HVAC System (Parking Area)_PE-1 | 9d | 2011-06-22 A | 2011-08-30 A | PP3EP22015C10 SS+14d, PP3EP09901C10 | 100% |  | 2011-08-28 | 2011-09-10 |  |  | MECHANICAL [1750.8 h]; Cost [101523 AED] | 101,522.74 | 101,522.74 | CP3PA23001C0 | PP3EP23011C0 | 85 | 55506.13 | 100 | 75 | PA | C | P3 | PK | ME | 230 | 11 | 1S | PE | S | BILL 2 | B02 | S2 | 1F | R00 | ACF04 | PE-1 | MEP | 230 | M1F |  |  |  |  |  |  |
| PP3EP21124C10 |  | PA-P3 ; 2nd Fix, Fire Fighting system (Parking Area)_PE-1 | 8d | 2011-06-28 A | 2011-10-23 | PP3EP21114C10 | 90% | 0.8d | 2011-07-21 | 2011-07-30 | 227.1d | 185.62d | MECHANICAL [297.6 h]; Cost [14636.1 AED] | 14,636.14 | 13,172.53 | CP3PA21115C0 | PP3EP21124C0 | 80 | 7592 | 90 | 75 | PA | C | P3 | PK | ME | 211 | 24 | 2n | PE | S | BILL 2 | B02 | S2 | 2F | R00 | ACF07 | PE-1 | MEP | 211 |  |  |  |  |  |  |  |
| PP3EP23021C10 |  | PA-P3 ; 2nd Fix, CHW / HVAC System (Parking Area)_PE-1 | 6d | 2011-06-28 A | 2011-10-23 | PP3EP23011C10 | 85% | 0.89d | 2011-09-10 | 2011-09-17 | 246.81d | 205.33d | MECHANICAL [1750.8 h]; Cost [101523 AED] | 101,522.74 | 86,294.33 | CP3PA23011C0 | PP3EP23021C0 | 85 | 55519.17 |  |  | PA | C | P3 | PK | ME | 230 | 21 | 2n | PE | S | BILL 2 | B02 | S2 | 2F | R00 | ACF07 | PE-1 | MEP | 230 |  | 0 | 0 | 0 | 0 |  |  |
| PP3EP22025C10 |  | PA-P3 ; 2nd Fix, Plumbing / Drainage System (Parking Area)_PE-1 | 20d | 2011-07-10 A | 2011-09-29 A | PP3EP22015C10 | 100% |  | 2011-07-26 | 2011-08-18 |  |  | PLUMBING [726 h]; Cost [39247.8 AED] | 39,247.83 | 39,247.83 | CP3PA22011C0 | PP3EP22025C0 | 40 |  | 90 | 35 | PA | C | P3 | PK | ME | 220 | 25 | 2n | PE | S | BILL 2 | B02 | S2 | 2F | R00 | ACF07 | PE-1 | MEP | 220 |  |  |  |  |  |  |  |
| PP3EP26012C10 |  | PA-P3 ; 1st Fix, Electrical System (Parking Area)_PE-1 | 16.54d | 2011-07-10 A | 2011-08-30 A | PP3EP21114C10 SS+6d, PP3EP09901C10 | 100% |  | 2011-07-02 | 2011-07-20 |  |  | ELECTRICAL [1776 h]; Cost [92758.2 AED] | 92,758.18 | 92,758.18 | CP3PA26001C0 | PP3EP26012C0 | 35 |  | 100 | 35 | PA | C | P3 | PK | ME | 260 | 12 | 1S | PE | S | BILL 2 | B02 | S2 | 1F | R00 | ACF04 | PE-1 | MEP | 260 | M1F |  |  |  |  |  |  |
| PP3EP26022C10 |  | PA-P3 ; 2nd Fix, Electrical System (Parking Area)_PE-1 | 9d | 2011-07-10 A | 2011-10-23 | PP3EP26012C10 | 90% | 0.89d | 2011-07-20 | 2011-07-31 | 254.61d | 213.14d | ELECTRICAL [1669.2 h]; Cost [92758.2 AED] | 92,758.18 | 83,482.36 | CP3PA26005C0 | PP3EP26022C0 | 25 |  | 80 | 25 | PA | C | P3 | PK | ME | 260 | 22 | 2n | PE | S | BILL 2 | B02 | S2 | 2F | R00 | ACF07 | PE-1 | MEP | 260 |  | 0 | 0 | 0 | 0 |  |  |
| PP3EP27013C10 |  | PA-P3 ; 1st Fix, ELV system (Parking Area)_PE-1 | 12d | 2011-07-10 A | 2011-08-30 A | PP3EP26012C10 SS+14d, PP3EP09901C10 | 100% |  | 2011-07-18 | 2011-07-31 |  |  | ELECTRICAL [272.4 h]; Cost [14034.6 AED] | 14,034.62 | 14,034.62 | CP3PA27010C0 | PP3EP27013C0 | 25 |  | 100 | 25 | PA | C | P3 | PK | ME | 270 | 13 | 1S | PE | S | BILL 2 | B02 | S2 | 1F | R00 | ACF04 | PE-1 | MEP | 270 | M1F |  |  |  |  |  |  |
| PP3EP27023C10 |  | PA-P3 ; 2nd Fix, ELV system (Parking Area)_PE-1 | 9d | 2011-07-10 A | 2011-10-26 | PP3EP27013C10 | 60% | 3.6d | 2011-08-01 | 2011-08-10 | 261.5d | 220.03d | ELECTRICAL [272.4 h]; Cost [14034.6 AED] | 14,034.62 | 8,420.77 | CP3PA27020C0 | PP3EP27023C0 | 25 |  | 60 | 25 | PA | C | P3 | PK | ME | 270 | 23 | 2n | PE | S | BILL 2 | B02 | S2 | 2F | R00 | ACF07 | PE-1 | MEP | 270 |  |  |  |  |  |  |  |
| PP3EP11006C10 |  | PA-P3 ; Wall Protection (WP, CG, WG, FCG) (Parking Area)_PE-1 | 20d | 2011-08-10 A | 2012-09-02 | PP3EP09903C10, PP2S103331C230, PP2S103331C240, PP3DP23021C10 | 99% | 0.2d | 2011-11-21 | 2011-12-17 | 41.48d | 0d | FF&E [101 h]; Cost |  |  | CP3PA11001C0 | PP3EP11006C0 |  |  | 80 | 0 | PA | C | P3 | PK | WF | 097 | 06 |  | PE | S | BILL 2 | B02 | S2 | 03 | R00 | ACF08 | PE-1 |  | 097 |  |  |  |  |  | 326 | 1001 |
| PP3EP21113C10 |  | PA-P3 ; Final Fix, Fire Fighting system (Parking Area)_PE-1 | 12d | 2011-08-10 A | 2012-06-12 | PP3EP09902C10, PP3EP21124C10, PP2S103331C230, PP2S103331C240, PP3DP23021C10 | 35% | 7.8d | 2011-10-20 | 2011-11-03 | 41.48d | 0d | MECHANICAL [241.2 h]; Cost [14636.1 AED] | 14,636.14 | 5,122.65 | CP3PA21113C0 | PP3EP21113C0 |  |  | 35 | 0 | PA | C | P3 | PK | ME | 211 | 13 | FF | PE | S | BILL 2 | B02 | S2 | FF | R00 | ACF07 | PE-1 | MEP | 211 |  |  |  |  |  |  |  |
| PP3EP23019C10 |  | PA-P3 ; Final Fix, CHW / HVAC System (Parking Area)_PE-1 | 12d | 2011-08-10 A | 2012-07-07 | PP3EP09902C10, PP3EP23021C10, PP2S103331C230, PP2S103331C240, PP3DP23021C10, PP3EP22011C10 | 35% | 7.8d | 2011-10-20 | 2011-11-03 | 41.48d | 0d | MECHANICAL [1672.8 h]; Cost [101523 AED] | 101,522.74 | 35,532.96 | CP3PA23019C0 | PP3EP23019C0 |  |  | 35 | 0 | PA | C | P3 | PK | ME | 230 | 19 | FF | PE | S | BILL 2 | B02 | S2 | FF | R00 | ACF07 | PE-1 | MEP | 230 |  |  |  |  |  |  |  |
| PP3EP26017C10 |  | PA-P3 ; Final Fix, Electrical System (Parking Area)_PE-1 | 12d | 2011-08-10 A | 2012-07-18 | PP3EP09902C10, PP3EP26022C10, PP2S103331C230, PP2S103331C240, PP3DP23021C10, PP3EP23019C10 | 20% | 9.6d | 2011-10-20 | 2011-11-03 | 41.48d | 0d | ELECTRICAL [1556.4 h]; Cost [92758.2 AED] | 92,758.18 | 18,551.64 | CP3PA26017C0 | PP3EP26017C0 |  |  | 20 | 0 | PA | C | P3 | PK | ME | 260 | 17 | FF | PE | S | BILL 2 | B02 | S2 | FF | R00 | ACF07 | PE-1 | MEP | 260 |  |  |  |  |  |  |  |
| PP3EP09901C10 |  | PA-P3 ; Prime & 1st coat (Wall & Ceiling) (Parking Area)_PE-1 | 18d | 2011-10-01 | 2011-10-22 | OGNMU00057S0, PGLS103391C40, PGLS103391C10 |  |  |  |  | 192.9d | 0d | CEILING PAINT [3104 h]; WALL PAINT [670 h]; CEILING PAINT [3873.3 m2]; WALL PAINT [836.4 m2]; Cost |  |  | CP3PA09901C0 | PP3EP09901C0 |  |  |  |  | PA | C | P3 | PK | PA | 099 | 01 |  | PE | S | BILL 2 | B02 | S2 | 01 | R00 | ACF06 | PE-1 |  | 099 |  |  |  |  |  | 328 | 956 |
| PP3EP09902C10 |  | PA-P3 ; 2nd coat (Wall & Ceiling) (Parking Area)_PE-1 | 23d | 2012-05-08 | 2012-06-04 | PP3EP09901C10 SS+30d, PP1DP09902C10 SS, PP3DP23021C10 |  |  |  |  | 41.48d | 0d | CEILING PAINT [1671 h]; WALL PAINT [361 h]; CEILING PAINT [2085.6 m2]; WALL PAINT [450.3 m2]; Cost |  |  | CP3PA09903C0 | PP3EP09902C0 |  |  |  |  | PA | C | P3 | PK | PA | 099 | 02 |  | PE | S | BILL 2 | B02 | S2 | 02 | R00 | ACF06 | PE-1 |  | 099 |  |  |  |  |  | 329 | 957 |
| PP3EP22011C10 |  | PA-P3 ; Final Fix, Drainage System (Parking Area)_PE-1 | 12d | 2012-06-12 | 2012-06-27 | PP3EP09902C10, PP3EP22025C10 FF, PP2S103331C230, PP2S103331C240, PP3DP23021C10, PP3EP21113C10 |  |  |  |  | 41.48d | 0d | PLUMBING [646.8 h]; Cost |  |  | CP3PA22011C0 | PP3EP22011C0 |  |  |  |  | PA | C | P3 | PK | ME | 220 | 11 | FF | PE | S | BILL 2 | B02 | S2 | FF | R00 | ACF07 | PE-1 | MEP | 220 |  |  |  |  |  |  |  |
| PP3EP27030C10 |  | PA-P3 ; Final Fix, ELV system (Parking Area)_PE-1 | 12d | 2012-07-18 | 2012-08-01 | PP3EP09902C10, PP3EP27023C10, PP3EP27023C10 FF, PP2S103331C230, PP2S103331C240, PP3DP23021C10, PP3EP26017C10 |  |  |  |  | 41.48d | 0d | ELECTRICAL [253.2 h]; Cost |  |  | CP3PA27030C0 | PP3EP27030C0 |  |  |  |  | PA | C | P3 | PK | ME | 270 | 30 | FF | PE | S | BILL 2 | B02 | S2 | FF | R00 | ACF07 | PE-1 | MEP | 270 |  |  |  |  |  |  |  |
| PP3EP09903C10 |  | PA-P3 ; Concrete Sealer (Floor) (Parking Area)_PE-1 | 25d | 2012-08-01 | 2012-09-02 | PP3EP21113C10, PP3EP22011C10, PP3EP23019C10, PP3EP26017C10, PP3EP27030C10, PP2S103331C230, PP2S103331C240, PP3DP23021C10 |  |  |  |  | 41.48d | 0d | ASSORTED FLOOR FINISH [5216 h]; ASSORTED FLOOR FINISH [2895.3 m2]; Cost |  |  | AP3PK09903C0 | PP3EP09903C0 |  |  |  |  | PA | C | P3 | PK | FF | 096 | 03 |  | PE | S | BILL 2 | B02 | S2 | 05 | R00 | ACF06 | PE-1 |  | CS |  |  |  |  |  |  |  |
| PP3EP05509C10 |  | PA-P3 ; Grill & Louvers (Parking Area)_PE-1 | 12d | 2012-09-02 | 2012-09-16 | PP3EP09903C10, PP2S103331C230, PP3DP23021C10 |  |  |  |  | 49.67d | 41.67d | SECONDARY STEEL [369 h]; Cost |  |  | CP3PA09901C0 | PP3AP09901C0 |  |  |  |  | PA | C | P3 | PK | SW | 055 | 01 |  | PE | S | BILL 2 | B02 | S2 | 02 | R00 | ACF03 | PE-1 |  | 056 |  |  |  |  |  | 328 | 956 |
| PP3EP11004C10 |  | PA-P3 ; Floor Marking & Signage (Parking Area)_PE-1 | 20d | 2012-09-02 | 2012-09-25 | PP3EP09903C10, PP3EP11006C10, PP2S103331C230, PP2S103331C240, PP3DP23021C10 |  |  |  |  | 41.48d | 33.48d | SIGNAGES [1206 h]; SIGNAGES [167.7 no]; Cost |  |  | AP3PK11004C0 | PP3EP11004C0 |  |  |  |  | PA | C | P3 | PK | SA | 110 | 04 |  | PE | S | BILL 2 | B02 | S2 | 09 | R00 | ACF08 | PE-1 |  | c |  |  |  |  |  |  |  |
|  | EP2 | **PARKING AREA ; Zone PE-2** |  | 2011-08-10 | 2012-11-19 |  |  |  |  |  |  |  |  |  |  |  |  |  |  |  |  |  |  |  |  |  |  |  |  |  |  |  |  |  |  |  |  |  |  |  |  |  |  |  |  |  |  |
| PP3EP26012C20 |  | PA-P3 ; 1st Fix, Electrical System (Parking Area)_PE-2 | 24d | 2011-08-10 A | 2012-03-01 | PP3EP21114C20 SS, PP3EP09901C20, PP3EP23011C20 | 33% | 16.2d | 2011-12-20 | 2012-01-17 | 224.15d | 0d | ELECTRICAL [2071.2 h]; Cost [92758.2 AED] | 92,758.18 | 9,275.82 | CP3PA26001C0 | PP3EP26012C0 |  |  | 10 | 0 | PA | C | P3 | PK | ME | 260 | 12 | 1S | PE | S | BILL 2 | B02 | S2 | 1F | R00 | ACF04 | PE-2 | MEP | 260 | M1F |  |  |  |  |  |  |
| PP3EP11006C20 |  | PA-P3 ; Wall Protection (WP, CG, WG, FCG) (Parking Area)_PE-2 | 5d | 2011-09-05 A | 2012-11-07 | PP3EP09903C20, PGLS103391C250, PGLS103331C270, PP1EM26008C0 SS | 5% | 4.75d | 2012-05-16 | 2012-05-22 | 103.79d | 0d | FF&E [117 h]; Cost |  |  | CP3PA11001C0 | PP3EP11006C0 |  |  |  |  | PA | C | P3 | PK | WF | 097 | 06 |  | PE | S | BILL 2 | B02 | S2 | 03 | R00 | ACF08 | PE-2 |  | 097 |  |  |  |  |  | 326 | 1001 |
| PP3EP09901C20 |  | PA-P3 ; Prime & 1st coat (Wall & Ceiling) (Parking Area)_PE-2 | 18d | 2011-10-01 | 2011-10-20 | OGNMU00057S0 SS, PGLS203392C0 SS, PGLS103391C60 SS |  |  |  |  | 155d | 0d | CEILING PAINT [3621 h]; WALL PAINT [782 h]; CEILING PAINT [4518.85 m2]; WALL PAINT [975.8 m2]; Cost |  |  | CP3PA09901C0 | PP3EP09901C0 |  |  |  |  | PA | C | P3 | PK | PA | 099 | 01 |  | PE | S | BILL 2 | B02 | S2 | 01 | R00 | ACF06 | PE-2 |  | 099 |  |  |  |  |  | 328 | 956 |
| PP3EP21114C20 |  | PA-P3 ; 1st Fix, Fire Fighting system (Parking Area)_PE-2 | 30d | 2011-10-22 | 2011-11-29 | PP3EP09901C20 |  |  |  |  | 155d | 0d | MECHANICAL [369.6 h]; Cost |  |  | CP3PA21109C0 | PP3EP21114C0 |  |  |  |  | PA | C | P3 | PK | ME | 211 | 14 | 1S | PE | S | BILL 2 | B02 | S2 | 1F | R00 | ACF04 | PE-2 | MEP | 211 | M1F |  |  |  |  |  |  |
| PP3EP21124C20 |  | PA-P3 ; 2nd Fix, Fire Fighting system (Parking Area)_PE-2 | 30d | 2011-11-30 | 2012-01-05 | PP3EP21114C20 |  |  |  |  | 282.35d | 178.56d | MECHANICAL [346.8 h]; Cost |  |  | CP3PA21115C0 | PP3EP21124C0 |  |  |  |  | PA | C | P3 | PK | ME | 211 | 24 | 2n | PE | S | BILL 2 | B02 | S2 | 2F | R00 | ACF07 | PE-2 | MEP | 211 |  |  |  |  |  |  |  |
| PP3EP22015C20 |  | PA-P3 ; 1st Fix, Plumbing / Drainage System (Parking Area)_PE-2 | 30d | 2011-11-30 | 2012-01-05 | PP3EP21114C20 SS, PP3EP09901C20, PP3EP21114C20 |  |  |  |  | 224.15d | 0d | PLUMBING [754.8 h]; Cost |  |  | CP3PA22001C0 | PP3EP22015C0 |  |  |  |  | PA | C | P3 | PK | ME | 220 | 15 | 1S | PE | S | BILL 2 | B02 | S2 | 1F | R00 | ACF04 | PE-2 | MEP | 220 | M1F |  |  |  |  |  |  |
| PP3EP22025C20 |  | PA-P3 ; 2nd Fix, Plumbing / Drainage System (Parking Area)_PE-2 | 30d | 2012-01-07 | 2012-02-11 | PP3EP22015C20 |  |  |  |  | 264.35d | 160.56d | PLUMBING [847.2 h]; Cost |  |  | CP3PA22011C0 | PP3EP22025C0 |  |  |  |  | PA | C | P3 | PK | ME | 220 | 25 | 2n | PE | S | BILL 2 | B02 | S2 | 2F | R00 | ACF07 | PE-2 | MEP | 220 |  |  |  |  |  |  |  |
| PP3EP23011C20 |  | PA-P3 ; 1st Fix, CHW / HVAC System (Parking Area)_PE-2 | 30d | 2012-01-07 | 2012-02-11 | PP3EP22015C20 SS, PP3EP09901C20, PP3EP22015C20 |  |  |  |  | 224.15d | 0d | MECHANICAL [2042.4 h]; Cost |  |  | CP3PA23001C0 | PP3EP23011C0 |  |  |  |  | PA | C | P3 | PK | ME | 230 | 11 | 1S | PE | S | BILL 2 | B02 | S2 | 1F | R00 | ACF04 | PE-2 | MEP | 230 | M1F |  |  |  |  |  |  |
| PP3EP23021C20 |  | PA-P3 ; 2nd Fix, CHW / HVAC System (Parking Area)_PE-2 | 30d | 2012-02-12 | 2012-03-17 | PP3EP23011C20 |  |  |  |  | 246.35d | 142.56d | MECHANICAL [2042.4 h]; Cost |  |  | CP3PA23011C0 | PP3EP23021C0 |  |  |  |  | PA | C | P3 | PK | ME | 230 | 21 | 2n | PE | S | BILL 2 | B02 | S2 | 2F | R00 | ACF07 | PE-2 | MEP | 230 |  |  |  |  |  |  |  |
| PP3EP26022C20 |  | PA-P3 ; 2nd Fix, Electrical System (Parking Area)_PE-2 | 30d | 2012-03-01 | 2012-04-05 | PP3EP26012C20 |  |  |  |  | 242.15d | 138.36d | ELECTRICAL [1946.4 h]; Cost |  |  | CP3PA26005C0 | PP3EP26022C0 |  |  |  |  | PA | C | P3 | PK | ME | 260 | 22 | 2n | PE | S | BILL 2 | B02 | S2 | 2F | R00 | ACF07 | PE-2 | MEP | 260 |  |  |  |  |  |  |  |
| PP3EP27013C20 |  | PA-P3 ; 1st Fix, ELV system (Parking Area)_PE-2 | 30d | 2012-03-01 | 2012-04-05 | PP3EP09901C20, PP3EP26012C20 |  |  |  |  | 224.15d | 0d | ELECTRICAL [318 h]; Cost |  |  | CP3PA27010C0 | PP3EP27013C0 |  |  |  |  | PA | C | P3 | PK | ME | 270 | 13 | 1S | PE | S | BILL 2 | B02 | S2 | 1F | R00 | ACF04 | PE-2 | MEP | 270 | M1F |  |  |  |  |  |  |
| PP3EP27023C20 |  | PA-P3 ; 2nd Fix, ELV system (Parking Area)_PE-2 | 30d | 2012-04-05 | 2012-05-10 | PP3EP27013C20 |  |  |  |  | 224.15d | 120.36d | ELECTRICAL [318 h]; Cost |  |  | CP3PA27020C0 | PP3EP27023C0 |  |  |  |  | PA | C | P3 | PK | ME | 270 | 23 | 2n | PE | S | BILL 2 | B02 | S2 | 2F | R00 | ACF07 | PE-2 | MEP | 270 |  |  |  |  |  |  |  |
| PP3EP09902C20 |  | PA-P3 ; 2nd coat (Wall & Ceiling) (Parking Area)_PE-2 | 15.9d | 2012-07-16 | 2012-08-04 | PP3EP09901C20 SS+30d, PGLS103331C270, PGLS103391C250, PP1EM26008C0 SS |  |  |  |  | 103.79d | 0d | CEILING PAINT [1950 h]; WALL PAINT [422 h]; CEILING PAINT [2433.2 m2]; WALL PAINT [525.35 m2]; Cost |  |  | CP3PA09903C0 | PP3EP09902C0 |  |  |  |  | PA | C | P3 | PK | PA | 099 | 02 |  | PE | S | BILL 2 | B02 | S2 | 02 | R00 | ACF06 | PE-2 |  | 099 |  |  |  |  |  | 329 | 957 |
| PP3EP21113C20 |  | PA-P3 ; Final Fix, Fire Fighting system (Parking Area)_PE-2 | 12d | 2012-08-04 | 2012-08-18 | PP3EP09902C20, PP3EP21124C20, PGLS103391C250, PGLS103331C270, PP1EM26008C0 SS |  |  |  |  | 103.79d | 0d | MECHANICAL [282 h]; Cost |  |  | CP3PA21113C0 | PP3EP21113C0 |  |  |  |  | PA | C | P3 | PK | ME | 211 | 13 | FF | PE | S | BILL 2 | B02 | S2 | FF | R00 | ACF07 | PE-2 | MEP | 211 |  |  |  |  |  |  |  |
| PP3EP22011C20 |  | PA-P3 ; Final Fix, Drainage System (Parking Area)_PE-2 | 12d | 2012-08-18 | 2012-09-03 | PP3EP09902C20, PP3EP22025C20, PGLS103391C250, PGLS103331C270, PP1EM26008C0 SS, PP3EP21113C20 |  |  |  |  | 103.79d | 0d | PLUMBING [754.8 h]; Cost |  |  | CP3PA22011C0 | PP3EP22011C0 |  |  |  |  | PA | C | P3 | PK | ME | 220 | 11 | FF | PE | S | BILL 2 | B02 | S2 | FF | R00 | ACF07 | PE-2 | MEP | 220 |  |  |  |  |  |  |  |
| PP3EP23019C20 |  | PA-P3 ; Final Fix, CHW / HVAC System (Parking Area)_PE-2 | 12d | 2012-09-03 | 2012-09-17 | PP3EP09902C20, PP3EP23021C20, PGLS103391C250, PGLS103331C270, PP1EM26008C0 SS, PP3EP22011C20 |  |  |  |  | 103.79d | 0d | MECHANICAL [1951.2 h]; Cost |  |  | CP3PA23019C0 | PP3EP23019C0 |  |  |  |  | PA | C | P3 | PK | ME | 230 | 19 | FF | PE | S | BILL 2 | B02 | S2 | FF | R00 | ACF07 | PE-2 | MEP | 230 |  |  |  |  |  |  |  |
| PP3EP26017C20 |  | PA-P3 ; Final Fix, Electrical System (Parking Area)_PE-2 | 12d | 2012-09-17 | 2012-10-01 | PP3EP09902C20, PP3EP26022C20, PGLS103391C250, PGLS103331C270, PP1EM26008C0 SS, PP3EP23019C20 |  |  |  |  | 103.79d | 0d | ELECTRICAL [1815.6 h]; Cost |  |  | CP3PA26017C0 | PP3EP26017C0 |  |  |  |  | PA | C | P3 | PK | ME | 260 | 17 | FF | PE | S | BILL 2 | B02 | S2 | FF | R00 | ACF07 | PE-2 | MEP | 260 |  |  |  |  |  |  |  |
| PP3EP27030C20 |  | PA-P3 ; Final Fix, ELV system (Parking Area)_PE-2 | 12d | 2012-10-01 | 2012-10-15 | PP3EP09902C20, PP3EP27023C20, PP3EP27023C20 FF, PGLS103391C250, PGLS103331C270, PP1EM26008C0 SS, PP3EP26017C20 |  |  |  |  | 103.79d | 0d | ELECTRICAL [295.2 h]; Cost |  |  | CP3PA27030C0 | PP3EP27030C0 |  |  |  |  | PA | C | P3 | PK | ME | 270 | 30 | FF | PE | S | BILL 2 | B02 | S2 | FF | R00 | ACF07 | PE-2 | MEP | 270 |  |  |  |  |  |  |  |
| PP3EP09903C20 |  | PA-P3 ; Concrete Sealer (Floor) (Parking Area)_PE-2 | 13d | 2012-10-15 | 2012-11-01 | PP3EP21113C20, PP3EP22011C20, PP3EP23019C20, PP3EP26017C20, PP3EP27030C20, PGLS103391C250, PGLS103331C270, PP1EM26008C0 SS |  |  |  |  | 103.79d | 0d | ASSORTED FLOOR FINISH [6080 h]; ASSORTED FLOOR FINISH [3377.85 m2]; Cost |  |  | AP3PK09903C0 | PP3EP09903C0 |  |  |  |  | PA | C | P3 | PK | FF | 096 | 03 |  | PE | S | BILL 2 | B02 | S2 | 05 | R00 | ACF06 | PE-2 |  | CS |  |  |  |  |  |  |  |
| PP3EP05509C20 |  | PA-P3 ; Grill & Louvers (Parking Area)_PE-2 | 5.78d | 2012-11-01 | 2012-11-08 | PP3EP09903C20, PGLS103391C250, PGLS103331C270, PP1EM26008C0 SS |  |  |  |  | 111.67d | 43.59d | SECONDARY STEEL [430 h]; Cost |  |  | CP3PA09901C0 | PP3AP09901C0 |  |  |  |  | PA | C | P3 | PK | SW | 055 | 01 |  | PE | S | BILL 2 | B02 | S2 | 02 | R00 | ACF03 | PE-2 |  | 056 |  |  |  |  |  | 328 | 956 |
| PP3EP11004C20 |  | PA-P3 ; Floor Marking & Signage (Parking Area)_PE-2 | 8.9d | 2012-11-07 | 2012-11-19 | PP3EP09903C20, PP3EP11006C20, PGLS103391C250, PGLS103331C270, PP1EM26008C0 SS |  |  |  |  | 103.79d | 35.72d | SIGNAGES [1407 h]; SIGNAGES [195.65 no]; Cost |  |  | AP3PK11004C0 | PP3EP11004C0 |  |  |  |  | PA | C | P3 | PK | SA | 110 | 04 |  | PE | S | BILL 2 | B02 | S2 | 09 | R00 | ACF08 | PE-2 |  | c |  |  |  |  |  |  |  |

| ID | WBS | Activity | Duration | Start | Finish | Predecessors | Complete | Remaining | Planned start | Planned finish | Total float | Free float | Resources | Cost | Actual cost | Change Order # | NEW ACTIVITY ID | change id | IDDD | CCAD BUILDING(SET) | CCAD PHASE(SET) | CCAD FLOOR(SET) | CCAD ZONE(SET) | CCAD WORK(SET) | CCAD SECTION(SET) | CCAD SERIAL No.(SET) | CCAD Carpark code(SET) | CCAD Carpark district code(set) | CCAD CBS(SET) | CCAD BILL(SET) | CCAD HANDOVER(SET) | CCAD TAG(SET) | CCAD REV(SET) | CCADACF (SET) | FSP CODE | CCAD SSCF | CCAD SUB ZONE MEP(SET) | CCAD CSA | Act Selector % | July2011 Target% Complete | Claimed This Month | P_811 | P_711 | CCAD MEQ | CCAD DIVISION(SET) |
| --- | --- | --- | --- | --- | --- | --- | --- | --- | --- | --- | --- | --- | --- | --- | --- | --- | --- | --- | --- | --- | --- | --- | --- | --- | --- | --- | --- | --- | --- | --- | --- | --- | --- | --- | --- | --- | --- | --- | --- | --- | --- | --- | --- | --- | --- |
|  | EP3 | **PARKING AREA ; Zone PE-3** |  | 2011-09-05 | 2012-12-02 |  |  |  |  |  |  |  |  |  |  |  |  |  |  |  |  |  |  |  |  |  |  |  |  |  |  |  |  |  |  |  |  |  |  |  |  |  |  |  |  |
| PP3EP11006C30 |  | PA-P3 ; Wall Protection (WP, CG, WG, FCG) (Parking Area)_PE-3 | 5d | 2011-09-05 A | 2012-11-21 | PP3EP09903C30 | 10% | 4.5d | 2012-05-20 | 2012-05-26 | 36.9d | 0d | FF&E [117 h]; Cost |  |  | 326 | 1001 | CP3PA11001C0 | PP3EP11006C0 | PA | C | P3 | PK | WF | 097 | 06 | PE | S | BILL 2 | B02 | S2 | 03 | R00 | ACF08 | PE-3 | 097 |  |  |  |  |  |  |  |  |  |
| PP3EP22015C30 |  | PA-P3 ; 1st Fix, Plumbing / Drainage System (Parking Area)_PE-3 | 24d | 2011-09-05 A | 2011-12-12 | PP3EP21114C30 SS, PP3EP09901C30, PP3EP21114C30 | 40% | 14.4d | 2012-01-16 | 2012-02-14 | 193.5d | 0d | PLUMBING [754.8 h]; Cost [39247.8 AED] | 39,247.83 | 7,849.57 |  |  | CP3PA22001C0 | PP3EP22015C0 | PA | C | P3 | PK | ME | 220 | 15 | PE | S | BILL 2 | B02 | S2 | 1F | R00 | ACF04 | PE-3 | 220 | 1S | MEP | M1F |  |  |  |  |  |  |
| PP3EP09901C30 |  | PA-P3 ; Prime & 1st coat (Wall & Ceiling) (Parking Area)_PE-3 | 18d | 2011-10-01 | 2011-10-22 | OGNMU00057S0, PGLS103393C0 SS, PGLS103391C80 SS |  |  |  |  | 193.5d | 0d | CEILING PAINT [3621 h]; WALL PAINT [782 h]; CEILING PAINT [4518.85 m2]; WALL PAINT [975.8 m2]; Cost |  |  | 328 | 956 | CP3PA09901C0 | PP3EP09901C0 | PA | C | P3 | PK | PA | 099 | 01 | PE | S | BILL 2 | B02 | S2 | 01 | R00 | ACF06 | PE-3 | 099 |  |  |  |  |  |  |  |  |  |
| PP3EP21114C30 |  | PA-P3 ; 1st Fix, Fire Fighting system (Parking Area)_PE-3 | 24d | 2011-10-22 | 2011-11-22 | PGLS103391C80, PP3EP09901C30 |  |  |  |  | 193.5d | 0d | MECHANICAL [369.6 h]; Cost |  |  |  |  | CP3PA21109C0 | PP3EP21114C0 | PA | C | P3 | PK | ME | 211 | 14 | PE | S | BILL 2 | B02 | S2 | 1F | R00 | ACF04 | PE-3 | 211 | 1S | MEP | M1F |  |  |  |  |  |  |
| PP3EP21124C30 |  | PA-P3 ; 2nd Fix, Fire Fighting system (Parking Area)_PE-3 | 30d | 2011-11-22 | 2011-12-29 | PP3EP21114C30 |  |  |  |  | 231.9d | 195d | MECHANICAL [346.8 h]; Cost |  |  |  |  | CP3PA21115C0 | PP3EP21124C0 | PA | C | P3 | PK | ME | 211 | 24 | PE | S | BILL 2 | B02 | S2 | 2F | R00 | ACF07 | PE-3 | 211 | 2n | MEP |  |  |  |  |  |  |  |
| PP3EP22025C30 |  | PA-P3 ; 2nd Fix, Plumbing / Drainage System (Parking Area)_PE-3 | 30d | 2011-12-12 | 2012-01-17 | PP3EP22015C30 |  |  |  |  | 229.5d | 192.6d | PLUMBING [847.2 h]; Cost |  |  |  |  | CP3PA22011C0 | PP3EP22025C0 | PA | C | P3 | PK | ME | 220 | 25 | PE | S | BILL 2 | B02 | S2 | 2F | R00 | ACF07 | PE-3 | 220 | 2n | MEP |  |  |  |  |  |  |  |
| PP3EP23011C30 |  | PA-P3 ; 1st Fix, CHW / HVAC System (Parking Area)_PE-3 | 24d | 2011-12-12 | 2012-01-10 | PP3EP22015C30 SS, PP3EP09901C30, PP3EP22015C30 |  |  |  |  | 193.5d | 0d | MECHANICAL [2042.4 h]; Cost |  |  |  |  | CP3PA23001C0 | PP3EP23011C0 | PA | C | P3 | PK | ME | 230 | 11 | PE | S | BILL 2 | B02 | S2 | 1F | R00 | ACF04 | PE-3 | 230 | 1S | MEP | M1F |  |  |  |  |  |  |
| PP3EP23021C30 |  | PA-P3 ; 2nd Fix, CHW / HVAC System (Parking Area)_PE-3 | 30d | 2012-01-10 | 2012-02-15 | PP3EP23011C30 |  |  |  |  | 217.5d | 180.6d | MECHANICAL [2042.4 h]; Cost |  |  |  |  | CP3PA23011C0 | PP3EP23021C0 | PA | C | P3 | PK | ME | 230 | 21 | PE | S | BILL 2 | B02 | S2 | 2F | R00 | ACF07 | PE-3 | 230 | 2n | MEP |  |  |  |  |  |  |  |
| PP3EP26012C30 |  | PA-P3 ; 1st Fix, Electrical System (Parking Area)_PE-3 | 24d | 2012-01-10 | 2012-02-08 | PP3EP21114C30 SS, PP3EP09901C30, PP3EP23011C30 |  |  |  |  | 193.5d | 0d | ELECTRICAL [2071.2 h]; Cost |  |  |  |  | CP3PA26001C0 | PP3EP26012C0 | PA | C | P3 | PK | ME | 260 | 12 | PE | S | BILL 2 | B02 | S2 | 1F | R00 | ACF04 | PE-3 | 260 | 1S | MEP | M1F |  |  |  |  |  |  |
| PP3EP26022C30 |  | PA-P3 ; 2nd Fix, Electrical System (Parking Area)_PE-3 | 30d | 2012-02-08 | 2012-03-14 | PP3EP26012C30 |  |  |  |  | 205.5d | 168.6d | ELECTRICAL [1946.4 h]; Cost |  |  |  |  | CP3PA26005C0 | PP3EP26022C0 | PA | C | P3 | PK | ME | 260 | 22 | PE | S | BILL 2 | B02 | S2 | 2F | R00 | ACF07 | PE-3 | 260 | 2n | MEP |  |  |  |  |  |  |  |
| PP3EP27013C30 |  | PA-P3 ; 1st Fix, ELV system (Parking Area)_PE-3 | 24d | 2012-02-08 | 2012-03-07 | PP3EP09901C30, PP3EP26012C30 |  |  |  |  | 193.5d | 0d | ELECTRICAL [318 h]; Cost |  |  |  |  | CP3PA27010C0 | PP3EP27013C0 | PA | C | P3 | PK | ME | 270 | 13 | PE | S | BILL 2 | B02 | S2 | 1F | R00 | ACF04 | PE-3 | 270 | 1S | MEP | M1F |  |  |  |  |  |  |
| PP3EP27023C30 |  | PA-P3 ; 2nd Fix, ELV system (Parking Area)_PE-3 | 30d | 2012-03-07 | 2012-04-11 | PP3EP27013C30 |  |  |  |  | 193.5d | 156.6d | ELECTRICAL [318 h]; Cost |  |  |  |  | CP3PA27020C0 | PP3EP27023C0 | PA | C | P3 | PK | ME | 270 | 23 | PE | S | BILL 2 | B02 | S2 | 2F | R00 | ACF07 | PE-3 | 270 | 2n | MEP |  |  |  |  |  |  |  |
| PP3EP09902C30 |  | PA-P3 ; 2nd coat (Wall & Ceiling) (Parking Area)_PE-3 | 15.9d | 2012-08-12 | 2012-09-02 | PP3EP09901C30 SS+30d, PP3DP21113C20 SS |  |  |  |  | 36.9d | 0d | CEILING PAINT [1950 h]; WALL PAINT [422 h]; CEILING PAINT [2433.2 m2]; WALL PAINT [525.35 m2]; Cost |  |  | 329 | 957 | CP3PA09903C0 | PP3EP09902C0 | PA | C | P3 | PK | PA | 099 | 02 | PE | S | BILL 2 | B02 | S2 | 02 | R00 | ACF06 | PE-3 | 099 |  |  |  |  |  |  |  |  |  |
| PP3EP21113C30 |  | PA-P3 ; Final Fix, Fire Fighting system (Parking Area)_PE-3 | 12d | 2012-08-16 | 2012-09-02 | PP3EP09902C30 FF, PP3EP21124C30, PP3DP21113C20 SS |  |  |  |  | 36.9d | 0d | MECHANICAL [282 h]; Cost |  |  |  |  | CP3PA21113C0 | PP3EP21113C0 | PA | C | P3 | PK | ME | 211 | 13 | PE | S | BILL 2 | B02 | S2 | FF | R00 | ACF07 | PE-3 | 211 | FF | MEP |  |  |  |  |  |  |  |
| PP3EP22011C30 |  | PA-P3 ; Final Fix, Drainage System (Parking Area)_PE-3 | 12d | 2012-09-02 | 2012-09-16 | PP3EP09902C30 FF, PP3EP22025C30, PP3DP21113C20 SS, PP3EP21113C30 |  |  |  |  | 36.9d | 0d | PLUMBING [754.8 h]; Cost |  |  |  |  | CP3PA22011C0 | PP3EP22011C0 | PA | C | P3 | PK | ME | 220 | 11 | PE | S | BILL 2 | B02 | S2 | FF | R00 | ACF07 | PE-3 | 220 | FF | MEP |  |  |  |  |  |  |  |
| PP3EP23019C30 |  | PA-P3 ; Final Fix, CHW / HVAC System (Parking Area)_PE-3 | 12d | 2012-09-16 | 2012-09-30 | PP3EP09902C30 FF, PP3EP23021C30, PP3DP21113C20 SS, PP3EP22011C30 |  |  |  |  | 36.9d | 0d | MECHANICAL [1951.2 h]; Cost |  |  |  |  | CP3PA23019C0 | PP3EP23019C0 | PA | C | P3 | PK | ME | 230 | 19 | PE | S | BILL 2 | B02 | S2 | FF | R00 | ACF07 | PE-3 | 230 | FF | MEP |  |  |  |  |  |  |  |
| PP3EP26017C30 |  | PA-P3 ; Final Fix, Electrical System (Parking Area)_PE-3 | 12d | 2012-09-30 | 2012-10-14 | PP3EP26022C30, PP3DP21113C20 SS, PP3EP23019C30 |  |  |  |  | 36.9d | 0d | ELECTRICAL [1815.6 h]; Cost |  |  |  |  | CP3PA26017C0 | PP3EP26017C0 | PA | C | P3 | PK | ME | 260 | 17 | PE | S | BILL 2 | B02 | S2 | FF | R00 | ACF07 | PE-3 | 260 | FF | MEP |  |  |  |  |  |  |  |
| PP3EP27030C30 |  | PA-P3 ; Final Fix, ELV system (Parking Area)_PE-3 | 12d | 2012-10-14 | 2012-10-30 | PP3EP09902C30 FF, PP3EP27023C30, PP3EP27023C30 FF, PP3DP21113C20 SS, PP3EP26017C30 |  |  |  |  | 36.9d | 0d | ELECTRICAL [295.2 h]; Cost |  |  |  |  | CP3PA27030C0 | PP3EP27030C0 | PA | C | P3 | PK | ME | 270 | 30 | PE | S | BILL 2 | B02 | S2 | FF | R00 | ACF07 | PE-3 | 270 | FF | MEP |  |  |  |  |  |  |  |
| PP3EP09903C30 |  | PA-P3 ; Concrete Sealer (Floor) (Parking Area)_PE-3 | 13d | 2012-10-30 | 2012-11-14 | PP3EP21113C30, PP3EP22011C30, PP3EP23019C30, PP3EP26017C30, PP3EP27030C30, PP3DP21113C20 SS |  |  |  |  | 36.9d | 0d | ASSORTED FLOOR FINISH [6080 h]; ASSORTED FLOOR FINISH [3377.85 m2]; Cost |  |  |  |  | AP3PK09903C0 | PP3EP09903C0 | PA | C | P3 | PK | FF | 096 | 03 | PE | S | BILL 2 | B02 | S2 | 05 | R00 | ACF06 | PE-3 | CS |  |  |  |  |  |  |  |  |  |
| PP3EP05509C30 |  | PA-P3 ; Grill & Louvers (Parking Area)_PE-3 | 5.78d | 2012-11-14 | 2012-11-22 | PP3EP09903C30, PP3DP21113C20 SS |  |  |  |  | 44.52d | 32.45d | SECONDARY STEEL [430 h]; Cost |  |  | 328 | 956 | CP3PA09901C0 | PP3AP09901C0 | PA | C | P3 | PK | SW | 055 | 01 | PE | S | BILL 2 | B02 | S2 | 02 | R00 | ACF03 | PE-3 | 056 |  |  |  |  |  |  |  |  |  |
| PP3EP11004C30 |  | PA-P3 ; Floor Marking & Signage (Parking Area)_PE-3 | 8.9d | 2012-11-21 | 2012-12-02 | PP3EP09903C30, PP3EP11006C30, PP3DP21113C20 SS |  |  |  |  | 36.9d | 24.82d | SIGNAGES [1407 h]; SIGNAGES [195.65 no]; Cost |  |  |  |  | AP3PK11004C0 | PP3EP11004C0 | PA | C | P3 | PK | SA | 110 | 04 | PE | S | BILL 2 | B02 | S2 | 09 | R00 | ACF08 | PE-3 | c |  |  |  |  |  |  |  |  |  |
|  | EE1 | **ELECTRICAL ROOMS (4 NOS.) ; Zone PE-1** |  | 2011-06-29 | 2012-07-09 |  |  |  |  |  |  |  |  |  |  |  |  |  |  |  |  |  |  |  |  |  |  |  |  |  |  |  |  |  |  |  |  |  |  |  |  |  |  |  |  |
| PP3EE04001C0 |  | PA-P3 ; Block Wall Works (Elec RM)_PE-1 | 18.88d | 2011-06-29 A | 2011-10-02 | OGNMU00001S0, PGLS103391C30, PP3EE09903C0 | 95% | 0.94d | 2011-07-07 | 2011-07-28 | 95.46d | 0d | BLOCKWORKS [754 h]; BLOCKWORKS [215.33 m2]; Cost |  |  |  |  | AP3ER04001C0 | PP3EE04001C0 | PA | C | P3 | ER | BL | 040 | 01 | PE | S | BILL 2 | B02 | S2 | BL | R00 | ACF06 | PE-1 | 040 |  |  |  | 25 | 8249.48 | 95 | 80 |  |  |
| PP3EE09903C0 |  | PA-P3 ; Ceiling Prime & 1st coat (Elec RM)_PE-1 | 20d | 2011-08-10 A | 2011-08-30 A | PGLS103391C40 FS+12d, PGLS103391C10 FS+12d | 100% |  | 2012-03-07 | 2012-03-31 |  |  | ASSORTED CEILING FINISH [33 h]; Cost |  |  |  | 1544 | CP2ME09905C0 | PP3EE09903C0 | PA | C | P3 | ER | PA | 099 | 03 | PE | S | BILL 2 | B02 | S2 | 01 | R00 | ACF06 | PE-1 | 099 |  |  |  |  |  | 100 | 0 |  |  |
| PP3EE09902C0 |  | PA-P3 ; Wall Prime & 1st coat (Elec RM)_PE-1 | 24d | 2011-09-05 A | 2011-10-09 | PAFOA09201C1 SS, OGNMU00015S0, OGNMU00009S0 FS+12d, PP3EE04001C0 | 75% | 6d | 2011-09-17 | 2011-10-13 | 296.36d | 174.48d | WALL PAINT [710 h]; WALL PAINT [884.67 m2]; Cost |  |  | 328 | 1378 | CP2ME09901C0 | PP3EE09902C0 | PA | C | P3 | ER | PA | 099 | 02 | PE | S | BILL 2 | B02 | S2 | 01 | R00 | ACF06 | PE-1 | 099 |  |  |  |  |  |  |  |  |  |
| PP3EE21104C0 |  | PA-P3 ; 2nd Fix, Inst of Sprinkler droppers (Elec RM)_PE-1 | 12d | 2011-09-05 A | 2011-09-29 A | PP3EE09501C0 | 100% |  | 2012-02-26 | 2012-03-11 |  |  | MECHANICAL [2258.4 h]; Cost [116310 AED] | 116,310.48 | 116,310.48 |  |  | CP2ME21120C0 | PP3EE21104C0 | PA | C | P3 | ER | ME | 211 | 04 | PE | S | BILL 2 | B02 | S2 | 2F | R00 | ACF07 | PE-1 | 211 | 2n | MEP |  |  |  |  |  |  |  |
| PP3EE23001C0 |  | PA-P3 ; 1st Fix, Inst. of Supports for MEP (Elec RM)_PE-1 | 20d | 2011-09-05 A | 2011-09-29 A | PP3EE04001C0 | 100% |  | 2011-09-03 | 2011-09-25 |  |  | MECHANICAL [589.2 h]; Cost [23502.1 AED] | 23,502.14 | 23,502.14 |  |  | CP2ME23010C0 | PP3EE23001C0 | PA | C | P3 | ER | ME | 230 | 01 | PE | S | BILL 2 | B02 | S2 | 1F | R00 | ACF04 | PE-1 | 230 | 1S | MEP | M1F |  |  |  |  |  |  |
| PP3EE23002C0 |  | PA-P3 ; 1st Fix, Inst of CHW pipe (Elec RM)_PE-1 | 26d | 2011-09-05 A | 2011-09-29 A | PP3EE23001C0 SS, PP3EE27002C0 SS, PP3EE04001C0 | 100% |  | 2011-11-09 | 2011-12-12 |  |  | MECHANICAL [2065.2 h]; Cost [112766 AED] | 112,765.55 | 112,765.55 |  |  | CP2ME23012C0 | PP3EE23002C0 | PA | C | P3 | ER | ME | 230 | 02 | PE | S | BILL 2 | B02 | S2 | 1F | R00 | ACF04 | PE-1 | 230 | 1S | MEP | M1F |  |  |  |  |  |  |
| PP3EE23003C0 |  | PA-P3 ; 1st Fix, Inst of Ducting (Elec RM)_PE-1 | 26d | 2011-09-05 A | 2011-09-29 A | PP3EE23001C0 SS, PP3EE23002C0 SS, PP3EE04001C0 | 100% |  | 2011-11-21 | 2011-12-24 |  |  | MECHANICAL [2631.6 h]; Cost [143818 AED] | 143,818 | 143,818 |  |  | CP2ME23014C0 | PP3EE23003C0 | PA | C | P3 | ER | ME | 230 | 03 | PE | S | BILL 2 | B02 | S2 | 1F | R00 | ACF04 | PE-1 | 230 | 1S | MEP | M1F |  |  |  |  |  |  |
| PP3EE26002C0 |  | PA-P3 ; 1st Fix, Inst of Cable Tray (Elec RM)_PE-1 | 26d | 2011-09-05 A | 2011-10-10 | PP3EE23001C0 SS, PP3EE26001C0 SS, PP3EE04001C0 | 75% | 6.5d | 2011-10-09 | 2011-11-12 | 95.46d | 0d | ELECTRICAL [42 h]; Cost [3087.98 AED] | 3,087.98 | 2,315.99 |  |  | CP2ME26012C0 | PP3EE26002C0 | PA | C | P3 | ER | ME | 260 | 02 | PE | S | BILL 2 | B02 | S2 | 1F | R00 | ACF04 | PE-1 | 260 | 1S | MEP | M1F |  |  |  |  |  |  |
| PP3EE26009C0 |  | PA-P3 ; 2nd Fix, Inst of Equipment (DB, TR, SG) (Elec RM)_PE-1 | 40d | 2011-09-05 A | 2011-10-30 | PP3EE08111C0, PAFOA09201C1, OGNMU00015S0, OGNMU00009S0 FS+12d | 60% | 16d | 2011-10-09 | 2011-11-29 | 297.36d | 156.48d | ELECTRICAL [795.6 h]; Cost [182884 AED] | 182,884.11 | 109,730.46 |  |  | CP2ME26024C0 | PP3EE26009C0 | PA | C | P3 | ER | ME | 260 | 09 | PE | S | BILL 2 | B02 | S2 | 2F | R00 | ACF04 | PE-1 | 260 | 2n | MEP |  |  |  |  |  | E |  |
| PP3EE27001C0 |  | PA-P3 ; 1st Fix, Wiring/ Cabling work (Elec RM)_PE-1 | 26d | 2011-09-05 A | 2011-10-08 | PP3EE27002C0 SS, PP3EE04001C0 | 80% | 5.17d | 2011-11-23 | 2011-12-26 | 267.18d | 0d | ELECTRICAL [51.6 h]; Cost [2848.06 AED] | 2,848.06 | 2,278.45 |  |  | CP2ME27012C0 | PP3EE27001C0 | PA | C | P3 | ER | ME | 270 | 01 | PE | S | BILL 2 | B02 | S2 | 1F | R00 | ACF04 | PE-1 | 270 | 1S | MEP | M1F |  |  |  |  |  |  |
| PP3EE27002C0 |  | PA-P3 ; 1st Fix, Inst of Trunking for ELV system (Elec RM)_PE-1 | 26d | 2011-09-05 A | 2011-10-10 | PP3EE23001C0 SS, PP3EE26002C0 SS, PP3EE04001C0 | 75% | 6.5d | 2011-10-22 | 2011-11-23 | 216.36d | 0d | ELECTRICAL [356.4 h]; Cost [19719.2 AED] | 19,719.22 | 14,789.41 |  |  | CP2ME27010C0 | PP3EE27002C0 | PA | C | P3 | ER | ME | 270 | 02 | PE | S | BILL 2 | B02 | S2 | 1F | R00 | ACF04 | PE-1 | 270 | 1S | MEP | M1F |  |  |  |  |  |  |
| PP3EE08102C0 |  | PA-P3 ; Metal Door Frames (Elec RM)_PE-1 | 11d | 2011-10-02 | 2011-10-15 | GNHE08101C0, OGNMU00009S0, PP3EE04001C0, PP2S103331C230, PP2S103331C240 |  |  |  |  | 307.48d | 169.48d | METAL DOORS [68 h]; Cost |  |  | 316 | 1374 | CP2ME08101C0 | PP3EE08102C0 | PA | C | P3 | ER | DO | 081 | 02 | PE | S | BILL 2 | B02 | S2 | DF | R00 | ACF06 | PE-1 | 081 |  |  |  |  |  |  |  |  | 08 |
| PP3EE08111C0 |  | PA-P3 ; Access Floor (Elec RM)_PE-1 | 8d | 2011-10-02 | 2011-10-11 | PP3EE04001C0 |  |  |  |  | 297.36d | 0d | ASSORTED FLOOR FINISH [216 h]; ASSORTED FLOOR FINISH [117.33 m2]; Cost |  |  | 317 | 1375 | CP2ER08105C0 |  | PA | C | P3 | ER | FF | 096 | 11 | PE | S | BILL 2 | B02 | S2 | 04 | R00 | ACF06 | PE-1 | AF |  |  |  |  |  |  |  |  | 08 |
| PP3EE23004C0 |  | PA-P3 ; 1st Fix, Inst of VCD's/FD's (Elec RM)_PE-1 | 26d | 2011-10-02 | 2011-11-01 | PP3EE23003C0 SS, PP3EE04001C0 |  |  |  |  | 216.36d | 0d | MECHANICAL [778.8 h]; Cost |  |  |  |  | CP2ME23016C0 | PP3EE23004C0 | PA | C | P3 | ER | ME | 230 | 04 | PE | S | BILL 2 | B02 | S2 | 1F | R00 | ACF04 | PE-1 | 230 | 1S | MEP | M1F |  |  |  |  |  |  |
| PP3EE23007C0 |  | PA-P3 ; 2nd Fix, Inst of VAV'S CHW connection (Elec RM)_PE-1 | 30d | 2011-10-02 | 2011-11-09 | PP3EE23001C0, PP3EE23003C0 |  |  |  |  | 242.36d | 26d | MECHANICAL [33.6 h]; Cost |  |  |  |  | CP2ME23020C0 | PP3EE23007C0 | PA | C | P3 | ER | ME | 230 | 07 | PE | S | BILL 2 | B02 | S2 | 2F | R00 | ACF07 | PE-1 | 230 | 2n | MEP |  |  |  |  |  |  |  |
| PP3EE23009C0 |  | PA-P3 ; 2nd Fix, Inst of VCD's/FD's (Elec RM)_PE-1 | 30d | 2011-10-02 | 2011-11-09 | PP3EE23003C0 |  |  |  |  | 242.36d | 26d | MECHANICAL [778.8 h]; Cost |  |  |  |  | CP2ME23024C0 | PP3EE23009C0 | PA | C | P3 | ER | ME | 230 | 09 | PE | S | BILL 2 | B02 | S2 | 2F | R00 | ACF07 | PE-1 | 230 | 2n | MEP |  |  |  |  |  |  |  |
| PP3EE26001C0 |  | PA-P3 ; 1st Fix, Inst of Trunking/Conduiting (Elec RM)_PE-1 | 26d | 2011-10-02 | 2011-11-01 | PP3EE23001C0 SS, PP3EE04001C0 |  |  |  |  | 95.46d | 0d | ELECTRICAL [128.4 h]; Cost |  |  |  |  | CP2ME26010C0 | PP3EE26001C0 | PA | C | P3 | ER | ME | 260 | 01 | PE | S | BILL 2 | B02 | S2 | 1F | R00 | ACF04 | PE-1 | 260 | 1S | MEP | M1F |  |  |  |  |  |  |
| PP3EE23008C0 |  | PA-P3 ; 2nd Fix, Inst of Equipment (FCU,FAN,PUMP) (Elec RM)_PE-1 | 30d | 2011-10-08 | 2011-11-15 | PAFOA09201C1, OGNMU00015S0, OGNMU00009S0 FS+12d, PP3EE27001C0 |  |  |  |  | 267.18d | 145.31d | MECHANICAL [1455.6 h]; Cost |  |  |  |  | CP2ME23022C0 | PP3EE23008C0 | PA | C | P3 | ER | ME | 230 | 08 | PE | S | BILL 2 | B02 | S2 | 2F | R00 | ACF04 | PE-1 | 230 | 2n | MEP |  |  |  |  |  | H |  |
| PP3EE26008C0 |  | PA-P3 ; 2nd Fix, Cable Pulling (Elec RM)_PE-1 | 30d | 2011-10-10 | 2011-11-17 | PP3EE26002C0 |  |  |  |  | 268.86d | 161.98d | ELECTRICAL [2731.2 h]; Cost |  |  |  |  | CP2ME26022C0 | PP3EE26008C0 | PA | C | P3 | ER | ME | 260 | 08 | PE | S | BILL 2 | B02 | S2 | 2F | R00 | ACF07 | PE-1 | 260 | 2n | MEP |  |  |  |  |  |  |  |
| PP3EE23010C0 |  | PA-P3 ; 2nd Fix, Insulation of CHW pipe & Duct (Elec RM)_PE-1 | 30d | 2011-11-01 | 2011-12-12 | PP3EE23001C0, PP3EE23004C0 |  |  |  |  | 216.36d | 0d | MECHANICAL [2640 h]; Cost |  |  |  |  | CP2ME23026C0 | PP3EE23010C0 | PA | C | P3 | ER | ME | 230 | 10 | PE | S | BILL 2 | B02 | S2 | 2F | R00 | ACF07 | PE-1 | 230 | 2n | MEP |  |  |  |  |  |  |  |
| PP3EE26007C0 |  | PA-P3 ; 2nd Fix, Wiring for Power/Lighting/Emergency (Elec RM)_PE-1 | 30d | 2011-11-01 | 2011-12-12 | PP3EE26001C0 |  |  |  |  | 249.36d | 142.48d | ELECTRICAL [51.6 h]; Cost |  |  |  |  | CP2ME26020C0 | PP3EE26007C0 | PA | C | P3 | ER | ME | 260 | 07 | PE | S | BILL 2 | B02 | S2 | 2F | R00 | ACF07 | PE-1 | 260 | 2n | MEP |  |  |  |  |  |  |  |
| PP3EE09501C0 |  | PA-P3 ; Ceiling Grid and Service Tile (Elec RM)_PE-1 | 15d | 2011-12-12 | 2011-12-29 | PP3EE23002C0, PP3EE23003C0, PP3EE23004C0, PP3EE23007C0, PP3EE23009C0, PP3EE23010C0, PP3EE26001C0, PP3EE26002C0, PAFOA09201C1 FS+15d, OGNMU00015S0 FS+15d, OGNMU00009S0 FS+27d, PP3EE04001C0 FS+27d |  |  |  |  | 216.36d | 0d | CEILING GRID FOR GYPSUM [4616.76 h]; CEILING GRID FOR GYPSUM [394.67 m2]; Cost |  |  | 323 | 1408 | CP2ME09501C0 | PP3EE09501C0 | PA | C | P3 | ER | CE | 095 | 01 | PE | S | BILL 2 | B02 | S2 | 01 | R00 | ACF06 | PE-1 | 095 |  |  |  |  |  |  |  |  |  |
| PP3EE21105C0 |  | PA-P3 ; 2nd Fix, Inst of Zone Control Valve (Elec RM)_PE-1 | 30d | 2011-12-29 | 2012-02-05 | PP3EE09501C0 |  |  |  |  | 344.36d | 276.28d | MECHANICAL [616.8 h]; Cost |  |  |  |  | CP2ME21124C0 | PP3EE21105C0 | PA | C | P3 | ER | ME | 211 | 05 | PE | S | BILL 2 | B02 | S2 | 2F | R00 | ACF07 | PE-1 | 211 | 2n | MEP |  |  |  |  |  |  |  |
| PP3EE27005C0 |  | PA-P3 ; 2nd Fix, Wiring Droppers (Elec RM)_PE-1 | 30d | 2011-12-29 | 2012-02-05 | PP3EE09501C0 |  |  |  |  | 344.36d | 276.28d | ELECTRICAL [51.6 h]; Cost |  |  |  |  | CP2ME27022C0 | PP3EE27005C0 | PA | C | P3 | ER | ME | 270 | 05 | PE | S | BILL 2 | B02 | S2 | 2F | R00 | ACF07 | PE-1 | 270 | 2n | MEP |  |  |  |  |  |  |  |
| PP3EE27006C0 |  | PA-P3 ; 2nd Fix, Inst of ELV Equipment (Panels) (Elec RM)_PE-1 | 30d | 2011-12-29 | 2012-02-05 | PAFOA09201C1, OGNMU00015S0, OGNMU00009S0 FS+12d, PP3EE09501C0 |  |  |  |  | 344.36d | 276.28d | ELECTRICAL [122.4 h]; Cost |  |  |  |  | CP2ME27020C0 | PP3EE27006C0 | PA | C | P3 | ER | ME | 270 | 06 | PE | S | BILL 2 | B02 | S2 | 2F | R00 | ACF04 | PE-1 | 270 | 2n | MEP |  |  |  |  |  | E |  |
| PP3EE05501C0 |  | PA-P3 ; Handrails & balustrade (Elec RM)_PE-1 | 24d | 2012-05-08 | 2012-06-05 | PP3EE09902C0, PP2S103331C230, PP2S103331C240, PP1DP09902C10 SS |  |  |  |  | 134.88d | 126.88d | SECONDARY STEEL [400 h]; Cost |  |  |  |  | CP2ME05501C0 | PP3EE05501C0 | PA | C | P3 | ER | SW | 055 | 01 | PE | S | BILL 2 | B02 | S2 | 01 | R00 | ACF03 | PE-1 | a |  |  |  |  |  |  |  |  |  |
| PP3EE08103C0 |  | PA-P3 ; Metal Doors (Elec RM)_PE-1 | 8.88d | 2012-05-08 | 2012-05-17 | PP3EE08102C0, PP2S103331C230, PP2S103331C240, PP1DP09902C10 SS |  |  |  |  | 138d | 0d | METAL DOORS [60 h]; METAL DOORS [6 no]; Cost |  |  | 317 | 1375 | CP2ME08105C0 | PP3EE08103C0 | PA | C | P3 | ER | DO | 081 | 03 | PE | S | BILL 2 | B02 | S2 | DR | R00 | ACF06 | PE-1 | 081 |  |  |  |  |  |  |  |  | 08 |
| PP3EE09601C0 |  | PA-P3 ; Flooring (Elec RM)_PE-1 | 19d | 2012-05-08 | 2012-05-30 | PP3EE09902C0, PP3EE09903C0, PP3EE23008C0, PP2S103331C230, PP2S103331C240, PP1DP09902C10 SS |  |  |  |  | 121.88d | 0d | ASSORTED FLOOR FINISH [3048 h]; ASSORTED FLOOR FINISH [1693.33 m2]; Cost |  |  | 326 | 1377 | CP2ME09601C0 | PP3EE09601C0 | PA | C | P3 | ER | FF | 096 | 01 | PE | S | BILL 2 | B02 | S2 | 01 | R00 | ACF06 | PE-1 | FF |  |  |  |  |  |  |  |  |  |
| PP3EE09901C0 |  | PA-P3 ; Wall - final Paint (Elec RM)_PE-1 | 9d | 2012-05-08 | 2012-05-19 | PP3EE09902C0, PP2S103331C230, PP2S103331C240, PP1DP09902C10 SS |  |  |  |  | 149.88d | 141.88d | WALL PAINT [383 h]; WALL PAINT [476.67 m2]; Cost |  |  | 329 | 1379 | CP2ME09903C0 | PP3EE09901C0 | PA | C | P3 | ER | PA | 099 | 01 | PE | S | BILL 2 | B02 | S2 | 02 | R00 | ACF06 | PE-1 | 099 |  |  |  |  |  |  |  |  |  |
| PP3EE09904C0 |  | PA-P3 ; Ceiling - final Paint (Elec RM)_PE-1 | 8d | 2012-05-08 | 2012-05-17 | PP3EE09903C0, PP2S103331C230, PP2S103331C240, PP1DP09902C10 SS |  |  |  |  | 150.88d | 142.88d | ASSORTED CEILING FINISH [18 h]; Cost |  |  |  | 1546 | CP2ME09907C0 | PP3EE09904C0 | PA | C | P3 | ER | PA | 099 | 04 | PE | S | BILL 2 | B02 | S2 | 02 | R00 | ACF06 | PE-1 | 099 |  |  |  |  |  |  |  |  |  |
| PP3EE23006C0 |  | PA-P3 ; 2nd Fix, Inst of Flexible Duct & Plenum boxes (Elec RM)_PE-1 | 18d | 2012-05-08 | 2012-05-29 | PP3EE09501C0, PP2S103331C230, PP2S103331C240, PP1DP09902C10 SS |  |  |  |  | 106.88d | 0d | MECHANICAL [22.8 h]; Cost |  |  |  |  | CP2ME23032C0 | PP3EE23006C0 | PA | C | P3 | ER | ME | 230 | 06 | PE | S | BILL 2 | B02 | S2 | FF | R00 | ACF07 | PE-1 | 230 | FF | MEP |  |  |  |  |  |  |  |
| PP3EE26004C0 |  | PA-P3 ; Final Fix, Inst of Ceiling rose (Elec RM)_PE-1 | 18d | 2012-05-08 | 2012-05-29 | PP3EE09501C0, PP2S103331C230, PP2S103331C240, PP1DP09902C10 SS |  |  |  |  | 140.88d | 132.88d | ELECTRICAL [16.8 h]; Cost |  |  |  |  | CP2ME26032C0 | PP3EE26004C0 | PA | C | P3 | ER | ME | 260 | 04 | PE | S | BILL 2 | B02 | S2 | FF | R00 | ACF07 | PE-1 | 260 | FF | MEP |  |  |  |  |  |  |  |
| PP3EE27003C0 |  | PA-P3 ; Final Fix, BMS connection work to Equipment (Elec RM)_PE-1 | 18d | 2012-05-08 | 2012-05-29 | PP3EE26009C0, PP2S103331C230, PP2S103331C240, PP1DP09902C10 SS |  |  |  |  | 140.88d | 132.88d | ELECTRICAL [1648.8 h]; Cost |  |  |  |  | CP2ME27032C0 | PP3EE27003C0 | PA | C | P3 | ER | ME | 270 | 03 | PE | S | BILL 2 | B02 | S2 | FF | R00 | ACF07 | PE-1 | 270 | FF | MEP |  |  |  |  |  |  |  |
| PP3EE08701C0 |  | PA-P3 ; Ironmongery (Elec RM)_PE-1 | 12d | 2012-05-19 | 2012-05-31 | PP3EE08103C0, PP2S103331C230, PP2S103331C240, PP1DP09902C10 SS |  |  |  |  | 138d | 130d | IRONMONGERY [60 h]; IRONMONGERY [6 no]; Cost |  |  | 322 | 6230 | CP2ME08709C0 | PP3EE08701C0 | PA | C | P3 | ER | DO | 087 | 01 | PE | S | BILL 2 | B02 | S2 | IM | R00 | ACF06 | PE-1 | 087 |  |  |  |  |  |  |  |  | 08 |
| PP3EE09502C0 |  | PA-P3 ; Ceiling closure (Elec RM)_PE-1 | 16d | 2012-05-29 | 2012-06-18 | PP3EE09501C0, PP3EE23006C0, PP3EE26007C0, PP3EE26008C0, PP3EE27001C0, PP2S103331C230, PP2S103331C240, PP1DP09902C10 SS |  |  |  |  | 106.88d | 0d | ASSORTED CEILING FINISH [261.17 h]; CEILING GYPSUM [129.56 h]; ASSORTED CEILING FINISH [424.67 m2]; CEILING GYPSUM [394.67 m2]; Cost |  |  | 324 | 1409 | CP2ME09503C0 | PP3EE09502C0 | PA | C | P3 | ER | CE | 095 | 02 | PE | S | BILL 2 | B02 | S2 | 02 | R00 | ACF06 | PE-1 | 095 |  |  |  |  |  |  |  |  |  |
| PP3EE22001C0 |  | PA-P3 ; Final Fix, Inst of All drain (Elec RM)_PE-1 | 18d | 2012-05-30 | 2012-06-21 | PP3EE09601C0, PP2S103331C230, PP2S103331C240, PP1DP09902C10 SS |  |  |  |  | 121.88d | 113.88d | PLUMBING [1437.6 h]; Cost |  |  |  |  | CP2ME22037C0 | PP3EE22001C0 | PA | C | P3 | ER | ME | 220 | 01 | PE | S | BILL 2 | B02 | S2 | FF | R00 | ACF07 | PE-1 | 220 | FF | MEP |  |  |  |  |  |  |  |
| PP3EE21101C0 |  | PA-P3 ; Final Fix, Gaseous Fire Suppression Electrical Room (Elec RM)_PE-1 | 18d | 2012-06-18 | 2012-07-09 | PP3EE09502C0, PP2S103331C230, PP2S103331C240, PP1DP09902C10 SS |  |  |  |  | 106.88d | 98.88d | MECHANICAL [464.4 h]; Cost |  |  |  |  | CP2ME21109C0 | PP3EE21101C0 | PA | C | P3 | ER | ME | 211 | 01 | PE | S | BILL 2 | B02 | S2 | FF | R00 | ACF07 | PE-1 | 211 | FF | MEP |  |  |  |  |  |  |  |
| PP3EE21102C0 |  | PA-P3 ; Final Fix, Gaseous Fire Suppression Transformer room (Elec RM)_PE-1 | 18d | 2012-06-18 | 2012-07-09 | PP3EE09502C0, PP2S103331C230, PP2S103331C240, PP1DP09902C10 SS |  |  |  |  | 106.88d | 98.88d | MECHANICAL [464.4 h]; Cost |  |  |  |  | CP2ME21111C0 | PP3EE21102C0 | PA | C | P3 | ER | ME | 211 | 02 | PE | S | BILL 2 | B02 | S2 | FF | R00 | ACF07 | PE-1 | 211 | FF | MEP |  |  |  |  |  |  |  |
| PP3EE21103C0 |  | PA-P3 ; Final Fix, Gaseous Fire Suppression Telecom Room (Elec RM)_PE-1 | 18d | 2012-06-18 | 2012-07-09 | PP3EE09502C0, PP2S103331C230, PP2S103331C240, PP1DP09902C10 SS |  |  |  |  | 106.88d | 98.88d | MECHANICAL [464.4 h]; Cost |  |  |  |  | CP2ME21113C0 | PP3EE21103C0 | PA | C | P3 | ER | ME | 211 | 03 | PE | S | BILL 2 | B02 | S2 | FF | R00 | ACF07 | PE-1 | 211 | FF | MEP |  |  |  |  |  |  |  |
| PP3EE23005C0 |  | PA-P3 ; Final Fix, Inst of Grilles & Diffusers (Elec RM)_PE-1 | 18d | 2012-06-18 | 2012-07-09 | PP3EE09502C0, PP2S103331C230, PP2S103331C240, PP1DP09902C10 SS |  |  |  |  | 106.88d | 98.88d | MECHANICAL [330 h]; Cost |  |  |  |  | CP2ME23030C0 | PP3EE23005C0 | PA | C | P3 | ER | ME | 230 | 05 | PE | S | BILL 2 | B02 | S2 | FF | R00 | ACF07 | PE-1 | 230 | FF | MEP |  |  |  |  |  |  |  |
| PP3EE26003C0 |  | PA-P3 ; Final Fix, Termination & Gladding of Cables (Elec RM)_PE-1 | 18d | 2012-06-18 | 2012-07-09 | PP3EE09502C0, PP2S103331C230, PP2S103331C240, PP1DP09902C10 SS |  |  |  |  | 106.88d | 98.88d | ELECTRICAL [342 h]; Cost |  |  |  |  | CP2ME26030C0 | PP3EE26003C0 | PA | C | P3 | ER | ME | 260 | 03 | PE | S | BILL 2 | B02 | S2 | FF | R00 | ACF07 | PE-1 | 260 | FF | MEP |  |  |  |  |  |  |  |
| PP3EE26005C0 |  | PA-P3 ; Final Fix, Inst of Switch/Sockets (Elec RM)_PE-1 | 18d | 2012-06-18 | 2012-07-09 | PP3EE09502C0, PP2S103331C230, PP2S103331C240, PP1DP09902C10 SS |  |  |  |  | 106.88d | 98.88d | ELECTRICAL [82.8 h]; Cost |  |  |  |  | CP2ME26034C0 | PP3EE26005C0 | PA | C | P3 | ER | ME | 260 | 05 | PE | S | BILL 2 | B02 | S2 | FF | R00 | ACF07 | PE-1 | 260 | FF | MEP |  |  |  |  |  |  |  |
| PP3EE26006C0 |  | PA-P3 ; Final Fix, Inst of Light fittings (Elec RM)_PE-1 | 18d | 2012-06-18 | 2012-07-09 | PP3EE09502C0, PP2S103331C230, PP2S103331C240, PP1DP09902C10 SS |  |  |  |  | 106.88d | 98.88d | ELECTRICAL [2083.2 h]; Cost |  |  |  |  | CP2ME26039C0 | PP3EE26006C0 | PA | C | P3 | ER | ME | 260 | 06 | PE | S | BILL 2 | B02 | S2 | FF | R00 | ACF07 | PE-1 | 260 | FF | MEP |  |  |  |  |  |  |  |
| PP3EE27004C0 |  | PA-P3 ; Final Fix, Inst of ELV device (Detector/Speaker) (Elec RM)_PE-1 | 18d | 2012-06-18 | 2012-07-09 | PP3EE09502C0, PP2S103331C230, PP2S103331C240, PP1DP09902C10 SS |  |  |  |  | 106.88d | 98.88d | ELECTRICAL [51.6 h]; Cost |  |  |  |  | CP2ME27030C0 | PP3EE27004C0 | PA | C | P3 | ER | ME | 270 | 04 | PE | S | BILL 2 | B02 | S2 | FF | R00 | ACF07 | PE-1 | 270 | FF | MEP |  |  |  |  |  |  |  |

| ID | WBS | Activity | Duration | Start | Finish | Predecessors | Total float | Free float | Resources | NEW ACTIVITY ID | change id | IDDD | CCAD BUILDING(SET) | CCAD PHASE(SET) | CCAD FLOOR(SET) | CCAD ZONE(SET) | CCAD WORK(SET) | CCAD SECTION(SET) | CCAD SERIAL No.(SET) | CCAD Carpark code(SET) | CCAD Carpark district code(set) | CCAD CBS(SET) | CCAD BILL(SET) | CCAD HANDOVER(SET) | CCAD TAG(SET) | CCAD REV(SET) | CCADACF (SET) | FSP CODE | CCAD SSCF | Change Order # | CCAD DIVISION(SET) | CCAD SUB ZONE MEP(SET) | CCAD CSA | Act Selector % | CCAD MEQ |
| --- | --- | --- | --- | --- | --- | --- | --- | --- | --- | --- | --- | --- | --- | --- | --- | --- | --- | --- | --- | --- | --- | --- | --- | --- | --- | --- | --- | --- | --- | --- | --- | --- | --- | --- | --- |
|  | EE2 | **ELECTRICAL ROOMS (2 NOS.) ; Zone PE-2** |  | 2011-11-19 | 2012-08-15 |  |  |  |  |  |  |  |  |  |  |  |  |  |  |  |  |  |  |  |  |  |  |  |  |  |  |  |  |  |  |
| PP3EE09903C10 |  | PA-P3 ; Ceiling Prime & 1st coat (Elec RM)_PE-2 | 18d | 2011-11-19 | 2011-12-12 | PGLS203392C0 FS+24d, PGLS103391C60 FS+24d | 120.72d | 0d | ASSORTED CEILING FINISH [17 h]; Cost | 1544 | CP2ME09905C0 | PP3EE09903C0 | PA | C | P3 | ER | PA | 099 | 03 | PE | S | BILL 2 | B02 | S2 | 01 | R00 | ACF06 | PE-2 | 099 |  |  |  |  |  |  |
| PP3EE04001C10 |  | PA-P3 ; Block Wall Works (Elec RM)_PE-2 | 30d | 2011-12-12 | 2012-01-17 | OGNMU00001S0, PP3EE09903C10 | 201.34d | 0d | BLOCKWORKS [377 h]; BLOCKWORKS [107.67 m2]; Cost |  | AP3ER04001C0 | PP3EE04001C0 | PA | C | P3 | ER | BL | 040 | 01 | PE | S | BILL 2 | B02 | S2 | BL | R00 | ACF06 | PE-2 | 040 |  |  |  |  |  |  |
| PP3EE08102C10 |  | PA-P3 ; Metal Door Frames (Elec RM)_PE-2 | 5d | 2012-01-17 | 2012-01-23 | GNHE08101C0, OGNMU00009S0, PP3EE04001C10 | 343.34d | 152d | METAL DOORS [34 h]; Cost | 1374 | CP2ME08101C0 | PP3EE08102C0 | PA | C | P3 | ER | DO | 081 | 02 | PE | S | BILL 2 | B02 | S2 | DF | R00 | ACF06 | PE-2 | 081 | 316 | 08 |  |  |  |  |
| PP3EE23001C10 |  | PA-P3 ; 1st Fix, Inst. of Supports for MEP (Elec RM)_PE-2 | 12d | 2012-01-17 | 2012-01-31 | PP3EE04001C10 | 201.34d | 0d | MECHANICAL [294 h]; Cost |  | CP2ME23010C0 | PP3EE23001C0 | PA | C | P3 | ER | ME | 230 | 01 | PE | S | BILL 2 | B02 | S2 | 1F | R00 | ACF04 | PE-2 | 230 |  |  | 1S | MEP | M1F |  |
| PP3EE09902C10 |  | PA-P3 ; Wall Prime & 1st coat (Elec RM)_PE-2 | 18d | 2012-01-31 | 2012-02-22 | PAFOA09201C1, OGNMU00015S0, OGNMU00009S0 FS+12d, PP3EE04001C10 FS+12d | 277.34d | 0d | WALL PAINT [355 h]; WALL PAINT [442.33 m2]; Cost | 1378 | CP2ME09901C0 | PP3EE09902C0 | PA | C | P3 | ER | PA | 099 | 02 | PE | S | BILL 2 | B02 | S2 | 01 | R00 | ACF06 | PE-2 | 099 | 328 |  |  |  |  |  |
| PP3EE23002C10 |  | PA-P3 ; 1st Fix, Inst of CHW pipe (Elec RM)_PE-2 | 30d | 2012-01-31 | 2012-03-07 | PP3EE23001C10, PP3EE04001C10 | 284.34d | 60d | MECHANICAL [1032 h]; Cost |  | CP2ME23012C0 | PP3EE23002C0 | PA | C | P3 | ER | ME | 230 | 02 | PE | S | BILL 2 | B02 | S2 | 1F | R00 | ACF04 | PE-2 | 230 |  |  | 1S | MEP | M1F |  |
| PP3EE23003C10 |  | PA-P3 ; 1st Fix, Inst of Ducting (Elec RM)_PE-2 | 30d | 2012-01-31 | 2012-03-07 | PP3EE23001C10, PP3EE04001C10 | 201.34d | 0d | MECHANICAL [1316.4 h]; Cost |  | CP2ME23014C0 | PP3EE23003C0 | PA | C | P3 | ER | ME | 230 | 03 | PE | S | BILL 2 | B02 | S2 | 1F | R00 | ACF04 | PE-2 | 230 |  |  | 1S | MEP | M1F |  |
| PP3EE08111C10 |  | PA-P3 ; Access Floor (Elec RM)_PE-2 | 4d | 2012-02-22 | 2012-02-27 | PP3EE09902C10 | 277.34d | 68d | ASSORTED FLOOR FINISH [112 h]; ASSORTED FLOOR FINISH [58.67 m2]; Cost | 1375 | CP2ER08105C0 |  | PA | C | P3 | ER | FF | 096 | 11 | PE | S | BILL 2 | B02 | S2 | 04 | R00 | ACF06 | PE-2 | AF | 317 | 08 |  |  |  |  |
| PP3EE23004C10 |  | PA-P3 ; 1st Fix, Inst of VCD's/FD's (Elec RM)_PE-2 | 30d | 2012-03-07 | 2012-04-11 | PP3EE23003C10, PP3EE04001C10 | 224.34d | 0d | MECHANICAL [390 h]; Cost |  | CP2ME23016C0 | PP3EE23004C0 | PA | C | P3 | ER | ME | 230 | 04 | PE | S | BILL 2 | B02 | S2 | 1F | R00 | ACF04 | PE-2 | 230 |  |  | 1S | MEP | M1F |  |
| PP3EE23007C10 |  | PA-P3 ; 2nd Fix, Inst of VAV'S CHW connection (Elec RM)_PE-2 | 30d | 2012-03-07 | 2012-04-11 | PP3EE23001C10, PP3EE23003C10 | 254.34d | 30d | MECHANICAL [16.8 h]; Cost |  | CP2ME23020C0 | PP3EE23007C0 | PA | C | P3 | ER | ME | 230 | 07 | PE | S | BILL 2 | B02 | S2 | 2F | R00 | ACF07 | PE-2 | 230 |  |  | 2n | MEP |  |  |
| PP3EE23009C10 |  | PA-P3 ; 2nd Fix, Inst of VCD's/FD's (Elec RM)_PE-2 | 30d | 2012-03-07 | 2012-04-11 | PP3EE23003C10 | 254.34d | 30d | MECHANICAL [390 h]; Cost |  | CP2ME23024C0 | PP3EE23009C0 | PA | C | P3 | ER | ME | 230 | 09 | PE | S | BILL 2 | B02 | S2 | 2F | R00 | ACF07 | PE-2 | 230 |  |  | 2n | MEP |  |  |
| PP3EE26001C10 |  | PA-P3 ; 1st Fix, Inst of Trunking/Conduiting (Elec RM)_PE-2 | 30d | 2012-03-07 | 2012-04-11 | PP3EE23001C10, PP3EE04001C10, PP3EE23003C10 | 201.34d | 0d | ELECTRICAL [63.6 h]; Cost |  | CP2ME26010C0 | PP3EE26001C0 | PA | C | P3 | ER | ME | 260 | 01 | PE | S | BILL 2 | B02 | S2 | 1F | R00 | ACF04 | PE-2 | 260 |  |  | 1S | MEP | M1F |  |
| PP3EE26002C10 |  | PA-P3 ; 1st Fix, Inst of Cable Tray (Elec RM)_PE-2 | 30d | 2012-03-07 | 2012-04-11 | PP3EE23001C10, PP3EE26001C10 SS, PP3EE04001C10, PP3EE23003C10 | 201.34d | 0d | ELECTRICAL [21.6 h]; Cost |  | CP2ME26012C0 | PP3EE26002C0 | PA | C | P3 | ER | ME | 260 | 02 | PE | S | BILL 2 | B02 | S2 | 1F | R00 | ACF04 | PE-2 | 260 |  |  | 1S | MEP | M1F |  |
| PP3EE27002C10 |  | PA-P3 ; 1st Fix, Inst of Trunking for ELV system (Elec RM)_PE-2 | 30d | 2012-03-07 | 2012-04-11 | PP3EE23001C10, PP3EE26002C10 SS, PP3EE04001C10, PP3EE23003C10 | 201.34d | 0d | ELECTRICAL [178.8 h]; Cost |  | CP2ME27010C0 | PP3EE27002C0 | PA | C | P3 | ER | ME | 270 | 02 | PE | S | BILL 2 | B02 | S2 | 1F | R00 | ACF04 | PE-2 | 270 |  |  | 1S | MEP | M1F |  |
| PP3EE23010C10 |  | PA-P3 ; 2nd Fix, Insulation of CHW pipe & Duct (Elec RM)_PE-2 | 30d | 2012-04-11 | 2012-05-16 | PP3EE23001C10, PP3EE23004C10 | 224.34d | 0d | MECHANICAL [1320 h]; Cost |  | CP2ME23026C0 | PP3EE23010C0 | PA | C | P3 | ER | ME | 230 | 10 | PE | S | BILL 2 | B02 | S2 | 2F | R00 | ACF07 | PE-2 | 230 |  |  | 2n | MEP |  |  |
| PP3EE26008C10 |  | PA-P3 ; 2nd Fix, Cable Pulling (Elec RM)_PE-2 | 30d | 2012-04-11 | 2012-05-16 | PP3EE26002C10 | 231.34d | 51d | ELECTRICAL [1365.6 h]; Cost |  | CP2ME26022C0 | PP3EE26008C0 | PA | C | P3 | ER | ME | 260 | 08 | PE | S | BILL 2 | B02 | S2 | 2F | R00 | ACF07 | PE-2 | 260 |  |  | 2n | MEP |  |  |
| PP3EE27001C10 |  | PA-P3 ; 1st Fix, Wiring/ Cabling work (Elec RM)_PE-2 | 30d | 2012-04-11 | 2012-05-16 | PP3EE27002C10, PP3EE04001C10, PP3EE23003C10 | 201.34d | 0d | ELECTRICAL [25.2 h]; Cost |  | CP2ME27012C0 | PP3EE27001C0 | PA | C | P3 | ER | ME | 270 | 01 | PE | S | BILL 2 | B02 | S2 | 1F | R00 | ACF04 | PE-2 | 270 |  |  | 1S | MEP | M1F |  |
| PP3EE21104C10 |  | PA-P3 ; 2nd Fix, Inst of Sprinkler droppers (Elec RM)_PE-2 | 30d | 2012-04-19 | 2012-05-24 | PP3EE09501C10 FF | 250.34d | 182.27d | MECHANICAL [1129.2 h]; Cost |  | CP2ME21120C0 | PP3EE21104C0 | PA | C | P3 | ER | ME | 211 | 04 | PE | S | BILL 2 | B02 | S2 | 2F | R00 | ACF07 | PE-2 | 211 |  |  | 2n | MEP |  |  |
| PP3EE21105C10 |  | PA-P3 ; 2nd Fix, Inst of Zone Control Valve (Elec RM)_PE-2 | 30d | 2012-04-19 | 2012-05-24 | PP3EE09501C10 FF | 250.34d | 182.27d | MECHANICAL [308.4 h]; Cost |  | CP2ME21124C0 | PP3EE21105C0 | PA | C | P3 | ER | ME | 211 | 05 | PE | S | BILL 2 | B02 | S2 | 2F | R00 | ACF07 | PE-2 | 211 |  |  | 2n | MEP |  |  |
| PP3EE27005C10 |  | PA-P3 ; 2nd Fix, Wiring Droppers (Elec RM)_PE-2 | 30d | 2012-04-19 | 2012-05-24 | PP3EE09501C10 FF | 250.34d | 182.27d | ELECTRICAL [25.2 h]; Cost |  | CP2ME27022C0 | PP3EE27005C0 | PA | C | P3 | ER | ME | 270 | 05 | PE | S | BILL 2 | B02 | S2 | 2F | R00 | ACF07 | PE-2 | 270 |  |  | 2n | MEP |  |  |
| PP3EE09501C10 |  | PA-P3 ; Ceiling Grid and Service Tile (Elec RM)_PE-2 | 7d | 2012-05-16 | 2012-05-24 | PP3EE23002C10, PP3EE23003C10, PP3EE23004C10, PP3EE23007C10, PP3EE23009C10, PP3EE23010C10, PP3EE26001C10, PP3EE26002C10, PAFOA09201C1 FS+15d, OGNMU00015S0 FS+15d, OGNMU00009S0 FS+27d, PP3EE04001C10 FS+27d | 224.34d | 0d | CEILING GRID FOR GYPSUM [2308.38 h]; CEILING GRID FOR GYPSUM [197.33 m2]; Cost | 1408 | CP2ME09501C0 | PP3EE09501C0 | PA | C | P3 | ER | CE | 095 | 01 | PE | S | BILL 2 | B02 | S2 | 01 | R00 | ACF06 | PE-2 | 095 | 323 |  |  |  |  |  |
| PP3EE23006C10 |  | PA-P3 ; 2nd Fix, Inst of Flexible Duct & Plenum boxes (Elec RM)_PE-2 | 18d | 2012-05-16 | 2012-06-06 | PP3EE27001C10 | 213.34d | 33d | MECHANICAL [10.8 h]; Cost |  | CP2ME23032C0 | PP3EE23006C0 | PA | C | P3 | ER | ME | 230 | 06 | PE | S | BILL 2 | B02 | S2 | FF | R00 | ACF07 | PE-2 | 230 |  |  | FF | MEP |  |  |
| PP3EE23008C10 |  | PA-P3 ; 2nd Fix, Inst of Equipment (FCU,FAN,PUMP) (Elec RM)_PE-2 | 30d | 2012-05-16 | 2012-06-21 | PAFOA09201C1, OGNMU00015S0, OGNMU00009S0 FS+12d, PP3EE27001C10 | 212.34d | 21d | MECHANICAL [728.4 h]; Cost |  | CP2ME23022C0 | PP3EE23008C0 | PA | C | P3 | ER | ME | 230 | 08 | PE | S | BILL 2 | B02 | S2 | 2F | R00 | ACF04 | PE-2 | 230 |  |  | 2n | MEP |  | H |
| PP3EE26007C10 |  | PA-P3 ; 2nd Fix, Wiring for Power/Lighting/Emergency (Elec RM)_PE-2 | 30d | 2012-05-16 | 2012-06-21 | PP3EE26001C10, PP3EE27001C10 | 201.34d | 21d | ELECTRICAL [25.2 h]; Cost |  | CP2ME26020C0 | PP3EE26007C0 | PA | C | P3 | ER | ME | 260 | 07 | PE | S | BILL 2 | B02 | S2 | 2F | R00 | ACF07 | PE-2 | 260 |  |  | 2n | MEP |  |  |
| PP3EE26009C10 |  | PA-P3 ; 2nd Fix, Inst of Equipment (DB, TR, SG) (Elec RM)_PE-2 | 30d | 2012-05-16 | 2012-06-21 | PP3EE08111C10, OGNMU00015S0, OGNMU00009S0 FS+12d, PP3EE27001C10 | 209.34d | 29d | ELECTRICAL [397.2 h]; Cost |  | CP2ME26024C0 | PP3EE26009C0 | PA | C | P3 | ER | ME | 260 | 09 | PE | S | BILL 2 | B02 | S2 | 2F | R00 | ACF04 | PE-2 | 260 |  |  | 2n | MEP |  | E |
| PP3EE27006C10 |  | PA-P3 ; 2nd Fix, Inst of ELV Equipment (Panels) (Elec RM)_PE-2 | 30d | 2012-05-16 | 2012-06-21 | PAFOA09201C1, OGNMU00015S0, OGNMU00009S0 FS+12d, PP3EE27001C10 | 227.34d | 159.27d | ELECTRICAL [61.2 h]; Cost |  | CP2ME27020C0 | PP3EE27006C0 | PA | C | P3 | ER | ME | 270 | 06 | PE | S | BILL 2 | B02 | S2 | 2F | R00 | ACF04 | PE-2 | 270 |  |  | 2n | MEP |  | E |
| PP3EE09502C10 |  | PA-P3 ; Ceiling closure (Elec RM)_PE-2 | 8d | 2012-07-16 | 2012-07-25 | PP3EE09501C10, PP3EE23006C10, PP3EE26007C10, PP3EE26008C10, PP3EE27001C10, PGLS103391C250, PGLS103331C270, PP1EM26008C0 SS | 180.34d | 0d | ASSORTED CEILING FINISH [130.59 h]; CEILING GYPSUM [64.78 h]; ASSORTED CEILING FINISH [212.33 m2]; CEILING GYPSUM [197.33 m2]; Cost | 1409 | CP2ME09503C0 | PP3EE09502C0 | PA | C | P3 | ER | CE | 095 | 02 | PE | S | BILL 2 | B02 | S2 | 02 | R00 | ACF06 | PE-2 | 095 | 324 |  |  |  |  |  |
| PP3EE09601C10 |  | PA-P3 ; Flooring (Elec RM)_PE-2 | 9d | 2012-07-16 | 2012-07-26 | PP3EE09902C10, PP3EE09903C10, PP3EE23008C10, PGLS103391C250, PGLS103331C270, PP3EE09901C10 FF, PP1EM26008C0 SS | 191.34d | 0d | ASSORTED FLOOR FINISH [1528 h]; ASSORTED FLOOR FINISH [846.67 m2]; Cost | 1377 | CP2ME09601C0 | PP3EE09601C0 | PA | C | P3 | ER | FF | 096 | 01 | PE | S | BILL 2 | B02 | S2 | 01 | R00 | ACF06 | PE-2 | FF | 326 |  |  |  |  |  |
| PP3EE22001C10 |  | PA-P3 ; Final Fix, Inst of All drain (Elec RM)_PE-2 | 18d | 2012-07-16 | 2012-08-06 | PGLS103391C250, PGLS103331C270, PP3EE09601C10 FF, PP1EM26008C0 SS | 188.34d | 120.27d | PLUMBING [718.8 h]; Cost |  | CP2ME22037C0 | PP3EE22001C0 | PA | C | P3 | ER | ME | 220 | 01 | PE | S | BILL 2 | B02 | S2 | FF | R00 | ACF07 | PE-2 | 220 |  |  | FF | MEP |  |  |
| PP3EE26004C10 |  | PA-P3 ; Final Fix, Inst of Ceiling rose (Elec RM)_PE-2 | 18d | 2012-07-16 | 2012-08-06 | PP3EE09501C10, PGLS103391C250, PGLS103331C270, PP1EM26008C0 SS | 188.34d | 120.27d | ELECTRICAL [8.4 h]; Cost |  | CP2ME26032C0 | PP3EE26004C0 | PA | C | P3 | ER | ME | 260 | 04 | PE | S | BILL 2 | B02 | S2 | FF | R00 | ACF07 | PE-2 | 260 |  |  | FF | MEP |  |  |
| PP3EE05501C10 |  | PA-P3 ; Handrails & balustrade (Elec RM)_PE-2 | 12d | 2012-07-19 | 2012-08-02 | PP3EE09902C10, PGLS103391C250, PGLS103331C270, PP3EE08701C10 FF, PP1EM26008C0 SS | 191.34d | 123.27d | SECONDARY STEEL [200 h]; Cost |  | CP2ME05501C0 | PP3EE05501C0 | PA | C | P3 | ER | SW | 055 | 01 | PE | S | BILL 2 | B02 | S2 | 01 | R00 | ACF03 | PE-2 | a |  |  |  |  |  |  |
| PP3EE08103C10 |  | PA-P3 ; Metal Doors (Elec RM)_PE-2 | 5d | 2012-07-21 | 2012-07-26 | PP3EE08102C10, PGLS103391C250, PGLS103331C270, PP3EE09601C10 FF, PP1EM26008C0 SS | 191.34d | 0d | METAL DOORS [30 h]; METAL DOORS [3 no]; Cost | 1375 | CP2ME08105C0 | PP3EE08103C0 | PA | C | P3 | ER | DO | 081 | 03 | PE | S | BILL 2 | B02 | S2 | DR | R00 | ACF06 | PE-2 | 081 | 317 | 08 |  |  |  |  |
| PP3EE09901C10 |  | PA-P3 ; Wall - final Paint (Elec RM)_PE-2 | 4d | 2012-07-21 | 2012-07-25 | PP3EE09902C10, PGLS103391C250, PGLS103331C270, PP3EE09502C10 FF, PP1EM26008C0 SS | 192.34d | 1d | WALL PAINT [191 h]; WALL PAINT [238.33 m2]; Cost | 1379 | CP2ME09903C0 | PP3EE09901C0 | PA | C | P3 | ER | PA | 099 | 01 | PE | S | BILL 2 | B02 | S2 | 02 | R00 | ACF06 | PE-2 | 099 | 329 |  |  |  |  |  |
| PP3EE09904C10 |  | PA-P3 ; Ceiling - final Paint (Elec RM)_PE-2 | 4d | 2012-07-21 | 2012-07-25 | PP3EE09903C10, PGLS103391C250, PGLS103331C270, PP3EE09502C10 FF, PP1EM26008C0 SS | 198.34d | 130.27d | ASSORTED CEILING FINISH [9 h]; Cost | 1546 | CP2ME09907C0 | PP3EE09904C0 | PA | C | P3 | ER | PA | 099 | 04 | PE | S | BILL 2 | B02 | S2 | 02 | R00 | ACF06 | PE-2 | 099 |  |  |  |  |  |  |
| PP3EE21101C10 |  | PA-P3 ; Final Fix, Gaseous Fire Suppression Electrical Room (Elec RM)_PE-2 | 18d | 2012-07-25 | 2012-08-15 | PP3EE09502C10, PGLS103391C250, PGLS103331C270, PP1EM26008C0 SS | 180.34d | 112.27d | MECHANICAL [232.8 h]; Cost |  | CP2ME21109C0 | PP3EE21101C0 | PA | C | P3 | ER | ME | 211 | 01 | PE | S | BILL 2 | B02 | S2 | FF | R00 | ACF07 | PE-2 | 211 |  |  | FF | MEP |  |  |
| PP3EE21102C10 |  | PA-P3 ; Final Fix, Gaseous Fire Suppression Transformer room (Elec RM)_PE-2 | 18d | 2012-07-25 | 2012-08-15 | PP3EE09502C10, PGLS103391C250, PGLS103331C270, PP1EM26008C0 SS | 180.34d | 112.27d | MECHANICAL [232.8 h]; Cost |  | CP2ME21111C0 | PP3EE21102C0 | PA | C | P3 | ER | ME | 211 | 02 | PE | S | BILL 2 | B02 | S2 | FF | R00 | ACF07 | PE-2 | 211 |  |  | FF | MEP |  |  |
| PP3EE21103C10 |  | PA-P3 ; Final Fix, Gaseous Fire Suppression Telecom Room (Elec RM)_PE-2 | 18d | 2012-07-25 | 2012-08-15 | PP3EE09502C10, PGLS103391C250, PGLS103331C270, PP1EM26008C0 SS | 180.34d | 112.27d | MECHANICAL [232.8 h]; Cost |  | CP2ME21113C0 | PP3EE21103C0 | PA | C | P3 | ER | ME | 211 | 03 | PE | S | BILL 2 | B02 | S2 | FF | R00 | ACF07 | PE-2 | 211 |  |  | FF | MEP |  |  |
| PP3EE23005C10 |  | PA-P3 ; Final Fix, Inst of Grilles & Diffusers (Elec RM)_PE-2 | 18d | 2012-07-25 | 2012-08-15 | PP3EE09502C10, PGLS103391C250, PGLS103331C270, PP1EM26008C0 SS | 180.34d | 112.27d | MECHANICAL [165.6 h]; Cost |  | CP2ME23030C0 | PP3EE23005C0 | PA | C | P3 | ER | ME | 230 | 05 | PE | S | BILL 2 | B02 | S2 | FF | R00 | ACF07 | PE-2 | 230 |  |  | FF | MEP |  |  |
| PP3EE26003C10 |  | PA-P3 ; Final Fix, Termination & Gladding of Cables (Elec RM)_PE-2 | 18d | 2012-07-25 | 2012-08-15 | PP3EE09502C10, PGLS103391C250, PGLS103331C270, PP1EM26008C0 SS | 180.34d | 112.27d | ELECTRICAL [170.4 h]; Cost |  | CP2ME26030C0 | PP3EE26003C0 | PA | C | P3 | ER | ME | 260 | 03 | PE | S | BILL 2 | B02 | S2 | FF | R00 | ACF07 | PE-2 | 260 |  |  | FF | MEP |  |  |
| PP3EE26005C10 |  | PA-P3 ; Final Fix, Inst of Switch/Sockets (Elec RM)_PE-2 | 18d | 2012-07-25 | 2012-08-15 | PP3EE09502C10, PGLS103391C250, PGLS103331C270, PP1EM26008C0 SS | 180.34d | 0d | ELECTRICAL [42 h]; Cost |  | CP2ME26034C0 | PP3EE26005C0 | PA | C | P3 | ER | ME | 260 | 05 | PE | S | BILL 2 | B02 | S2 | FF | R00 | ACF07 | PE-2 | 260 |  |  | FF | MEP |  |  |
| PP3EE26006C10 |  | PA-P3 ; Final Fix, Inst of Light fittings (Elec RM)_PE-2 | 18d | 2012-07-25 | 2012-08-15 | PP3EE09502C10, PGLS103391C250, PGLS103331C270, PP1EM26008C0 SS | 180.34d | 112.27d | ELECTRICAL [1041.6 h]; Cost |  | CP2ME26039C0 | PP3EE26006C0 | PA | C | P3 | ER | ME | 260 | 06 | PE | S | BILL 2 | B02 | S2 | FF | R00 | ACF07 | PE-2 | 260 |  |  | FF | MEP |  |  |
| PP3EE27003C10 |  | PA-P3 ; Final Fix, BMS connection work to Equipment (Elec RM)_PE-2 | 18d | 2012-07-25 | 2012-08-15 | PP3EE26009C10, PGLS103391C250, PGLS103331C270, PP3EE26005C10 FF, PP1EM26008C0 SS | 180.34d | 112.27d | ELECTRICAL [824.4 h]; Cost |  | CP2ME27032C0 | PP3EE27003C0 | PA | C | P3 | ER | ME | 270 | 03 | PE | S | BILL 2 | B02 | S2 | FF | R00 | ACF07 | PE-2 | 270 |  |  | FF | MEP |  |  |
| PP3EE27004C10 |  | PA-P3 ; Final Fix, Inst of ELV device (Detector/Speaker) (Elec RM)_PE-2 | 18d | 2012-07-25 | 2012-08-15 | PP3EE09502C10, PGLS103391C250, PGLS103331C270, PP1EM26008C0 SS | 180.34d | 112.27d | ELECTRICAL [26.4 h]; Cost |  | CP2ME27030C0 | PP3EE27004C0 | PA | C | P3 | ER | ME | 270 | 04 | PE | S | BILL 2 | B02 | S2 | FF | R00 | ACF07 | PE-2 | 270 |  |  | FF | MEP |  |  |
| PP3EE08701C10 |  | PA-P3 ; Ironmongery (Elec RM)_PE-2 | 6d | 2012-07-26 | 2012-08-02 | PP3EE08103C10, PGLS103391C250, PGLS103331C270, PP1EM26008C0 SS | 191.34d | 0d | IRONMONGERY [30 h]; IRONMONGERY [3 no]; Cost | 6230 | CP2ME08709C0 | PP3EE08701C0 | PA | C | P3 | ER | DO | 087 | 01 | PE | S | BILL 2 | B02 | S2 | IM | R00 | ACF06 | PE-2 | 087 | 322 | 08 |  |  |  |  |

| ID | WBS | Activity | Duration | Start | Finish | Predecessors | Complete | Remaining | Planned start | Planned finish | Total float | Free float | Resources | Cost | Actual cost | user_number8 | user_integer1 | user_integer2 | user_number7 | change id | IDDD | July2011 Target% Complete | Claimed This Month | P_811 | P_711 | CCAD BUILDING(SET) | CCAD PHASE(SET) | CCAD FLOOR(SET) | CCAD ZONE(SET) | CCAD WORK(SET) | CCAD SECTION(SET) | CCAD SERIAL No.(SET) | CCAD Carpark code(SET) | CCAD Carpark district code(set) | CCAD CBS(SET) | CCAD BILL(SET) | CCAD HANDOVER(SET) | CCAD TAG(SET) | CCAD REV(SET) | CCADACF (SET) | FSP CODE | CCAD SSCF | Change Order # | NEW ACTIVITY ID | CCAD SUB ZONE MEP(SET) | CCAD CSA | Act Selector % | CCAD MEQ | CCAD DIVISION(SET) |
| --- | --- | --- | --- | --- | --- | --- | --- | --- | --- | --- | --- | --- | --- | --- | --- | --- | --- | --- | --- | --- | --- | --- | --- | --- | --- | --- | --- | --- | --- | --- | --- | --- | --- | --- | --- | --- | --- | --- | --- | --- | --- | --- | --- | --- | --- | --- | --- | --- | --- |
|  | EM1 | **MECHANICAL ROOMS (8 NOS.) ; Zone PE-1** |  | 2011-06-28 | 2012-06-20 |  |  |  |  |  |  |  |  |  |  |  |  |  |  |  |  |  |  |  |  |  |  |  |  |  |  |  |  |  |  |  |  |  |  |  |  |  |  |  |  |  |  |  |  |
| PP3EM04001C10 |  | PA-P3 ; Block Wall Works (Mech RM)_PE-1 | 12d | 2011-06-28 A | 2011-10-09 | PGLS103391C30, PP3EM09902C10 | 95% | 0.6d | 2011-07-07 | 2011-07-20 | 211.7d | 0d | BLOCKWORKS [2654 h]; BLOCKWORKS [758.22 m2]; Cost |  |  | 0 | 0 | 0 | 0 | AP3M104001C0 | PP3EM04001C0 | 25 | 17323.91 | 90 | 25 | PA | C | P3 | M1 | BL | 040 | 01 | PE | S | BILL 2 | B02 | S2 | BL | R00 | ACF06 | PE-1 | 040 |  |  |  |  |  |  |  |
| PP3EM09902C10 |  | PA-P3 ; Wall Prime & 1st coat (Mech RM)_PE-1 | 24d | 2011-09-05 A | 2011-10-08 | PAFOA09201C1 SS, PGLS103391C40 FS+12d, PGLS103391C10 FS+12d | 75% | 6d | 2011-11-28 | 2011-12-27 | 211.7d | 0d | WALL PAINT [2498 h]; WALL PAINT [3117.78 m2]; Cost |  |  |  |  |  |  | C04ME09901C0 | PP3EM09902C0 |  |  |  |  | PA | C | P3 | M1 | PA | 099 | 02 | PE | S | BILL 2 | B02 | S2 | 01 | R00 | ACF06 | PE-1 | 099 | 328 | 1469 |  |  |  |  |  |
| PP3EM21101C10 |  | PA-P3 ; 1st Fix, Inst of Sprinkler branch pipe (Mech RM)_PE-1 | 24d | 2011-09-05 A | 2011-09-29 A | PP3EM21102C10 SS, PP3EM04001C10 | 100% |  | 2011-12-13 | 2012-01-11 |  |  | MECHANICAL [3589.2 h]; Cost [196156 AED] | 196,156.2 | 196,156.2 |  |  |  |  | C04ME21119C0 | PP3EM21101C0 |  |  |  |  | PA | C | P3 | M1 | ME | 211 | 01 | PE | S | BILL 2 | B02 | S2 | 1F | R00 | ACF04 | PE-1 | 211 |  |  | 1S | MEP | M1F |  |  |
| PP3EM26001C10 |  | PA-P3 ; 1st Fix, Inst of Cable Tray (Mech RM)_PE-1 | 21d | 2011-09-05 A | 2011-10-15 | PP3EM04001C10 | 75% | 5.25d | 2011-11-13 | 2011-12-10 | 250.45d | 0d | ELECTRICAL [28.8 h]; Cost [2058.65 AED] | 2,058.65 | 1,543.99 |  |  |  |  | C04ME26011C0 | PP3EM26001C0 |  |  |  |  | PA | C | P3 | M1 | ME | 260 | 01 | PE | S | BILL 2 | B02 | S2 | 1F | R00 | ACF04 | PE-1 | 260 |  |  | 1S | MEP | M1F |  |  |
| PP3EM26002C10 |  | PA-P3 ; 1st Fix, Inst of Trunking/Conduiting (Mech RM)_PE-1 | 21d | 2011-09-05 A | 2011-10-29 | PP3EM23003C10, PP3EM04001C10 | 75% | 5.25d | 2011-09-18 | 2011-10-12 | 211.7d | 0d | ELECTRICAL [252 h]; Cost [4999.59 AED] | 4,999.59 | 3,749.69 |  |  |  |  | C04ME26001C0 | PP3EM26002C0 |  |  |  |  | PA | C | P3 | M1 | ME | 260 | 02 | PE | S | BILL 2 | B02 | S2 | 1F | R00 | ACF04 | PE-1 | 260 |  |  | 1S | MEP | M1F |  |  |
| PP3EM27001C10 |  | PA-P3 ; 1st Fix, Inst of Trunking for ELV system (Mech RM)_PE-1 | 17d | 2011-09-05 A | 2011-10-30 | PP3EM23002C10 SS, PP3EM04001C10 | 75% | 4.25d | 2011-11-24 | 2011-12-17 | 264.5d | 0d | ELECTRICAL [237.6 h]; Cost [13146.1 AED] | 13,146.15 | 9,859.61 |  |  |  |  | C04ME27010C0 | PP3EM27001C0 |  |  |  |  | PA | C | P3 | M1 | ME | 270 | 01 | PE | S | BILL 2 | B02 | S2 | 1F | R00 | ACF04 | PE-1 | 270 |  |  | 1S | MEP | M1F |  |  |
| PP3EM27002C10 |  | PA-P3 ; 1st Fix, Wiring/ Cabling work (Mech RM)_PE-1 | 24d | 2011-09-05 A | 2011-11-02 | PP3EM26001C10 SS, PP3EM26002C10 SS, PP3EM27001C10 SS, PP3EM04001C10 | 70% | 7.2d | 2011-12-17 | 2012-01-15 | 264.5d | 14.05d | ELECTRICAL [33.6 h]; Cost [1898.71 AED] | 1,898.71 | 1,329.1 |  |  |  |  | C04ME27001C0 | PP3EM27002C0 |  |  |  |  | PA | C | P3 | M1 | ME | 270 | 02 | PE | S | BILL 2 | B02 | S2 | 1F | R00 | ACF04 | PE-1 | 270 |  |  | 1S | MEP | M1F |  |  |
| PP3EM23003C10 |  | PA-P3 ; 1st Fix, Inst. of Supports for MEP (Mech RM)_PE-1 | 12d | 2011-10-09 | 2011-10-23 | PP3EM04001C10 |  |  |  |  | 211.7d | 0d | MECHANICAL [362.4 h]; Cost |  |  |  |  |  |  | C04ME23001C0 | PP3EM23003C0 |  |  |  |  | PA | C | P3 | M1 | ME | 230 | 03 | PE | S | BILL 2 | B02 | S2 | 1F | R00 | ACF04 | PE-1 | 230 |  |  | 1S | MEP | M1F |  |  |
| PP3EM26003C10 |  | PA-P3 ; 2nd Fix, Cable Pulling (Mech RM)_PE-1 | 30d | 2011-10-15 | 2011-11-22 | PP3EM26001C10 |  |  |  |  | 250.45d | 0d | ELECTRICAL [1987.2 h]; Cost |  |  |  |  |  |  | C04ME26007C0 | PP3EM26003C0 |  |  |  |  | PA | C | P3 | M1 | ME | 260 | 03 | PE | S | BILL 2 | B02 | S2 | 2F | R00 | ACF07 | PE-1 | 260 |  |  | 2n | MEP |  |  |  |
| PP3EM21102C10 |  | PA-P3 ; 1st Fix, Inst of Sprinkler main pipe (Mech RM)_PE-1 | 32d | 2011-10-23 | 2011-12-05 | PP3EM22003C10 SS, PP3EM23003C10, PP3EM04001C10 |  |  |  |  | 223.7d | 0d | MECHANICAL [4365.6 h]; Cost |  |  |  |  |  |  | C04ME21111C0 | PP3EM21102C0 |  |  |  |  | PA | C | P3 | M1 | ME | 211 | 02 | PE | S | BILL 2 | B02 | S2 | 1F | R00 | ACF04 | PE-1 | 211 |  |  | 1S | MEP | M1F |  |  |
| PP3EM22001C10 |  | PA-P3 ; 1st Fix, Inst of Drainage pipe (Mech RM)_PE-1 | 32d | 2011-10-23 | 2011-12-05 | PP3EM23003C10, PP3EM26002C10 SS, PP3EM04001C10 |  |  |  |  | 211.7d | 0d | PLUMBING [958.8 h]; Cost |  |  |  |  |  |  | C04ME22011C0 | PP3EM22001C0 |  |  |  |  | PA | C | P3 | M1 | ME | 220 | 01 | PE | S | BILL 2 | B02 | S2 | 1F | R00 | ACF04 | PE-1 | 220 |  |  | 1S | MEP | M1F |  |  |
| PP3EM22003C10 |  | PA-P3 ; 1st Fix, Inst of Water supply pipe (Mech RM)_PE-1 | 32d | 2011-10-23 | 2011-12-05 | PP3EM22001C10 SS, PP3EM23003C10, PP3EM04001C10 |  |  |  |  | 211.7d | 0d | PLUMBING [2703.6 h]; Cost |  |  |  |  |  |  | C04ME22006C0 | PP3EM22003C0 |  |  |  |  | PA | C | P3 | M1 | ME | 220 | 03 | PE | S | BILL 2 | B02 | S2 | 1F | R00 | ACF04 | PE-1 | 220 |  |  | 1S | MEP | M1F |  |  |
| PP3EM23001C10 |  | PA-P3 ; 1st Fix, Inst of CHW pipe (Mech RM)_PE-1 | 32d | 2011-10-23 | 2011-12-05 | PP3EM21102C10 SS, PP3EM23003C10, PP3EM04001C10 |  |  |  |  | 223.7d | 0d | MECHANICAL [1376.4 h]; Cost |  |  |  |  |  |  | C04ME23019C0 | PP3EM23001C0 |  |  |  |  | PA | C | P3 | M1 | ME | 230 | 01 | PE | S | BILL 2 | B02 | S2 | 1F | R00 | ACF04 | PE-1 | 230 |  |  | 1S | MEP | M1F |  |  |
| PP3EM23002C10 |  | PA-P3 ; 1st Fix, Inst of Ducting (Mech RM)_PE-1 | 32d | 2011-10-25 | 2011-12-07 | PP3EM23003C10, PP3EM23004C10 SS, PP3EM04001C10 |  |  |  |  | 221.7d | 0d | MECHANICAL [1754.4 h]; Cost |  |  |  |  |  |  | C04ME23005C0 | PP3EM23002C0 |  |  |  |  | PA | C | P3 | M1 | ME | 230 | 02 | PE | S | BILL 2 | B02 | S2 | 1F | R00 | ACF04 | PE-1 | 230 |  |  | 1S | MEP | M1F |  |  |
| PP3EM23004C10 |  | PA-P3 ; 2nd Fix, Inst of Equipment (Mech RM)_PE-1 | 30d | 2011-10-25 | 2011-12-05 | PP3EM22001C10 FF, PP3EM22003C10 FF |  |  |  |  | 211.7d | 0d | Labor General [1.2 h]; Cost |  |  |  |  |  |  | C04ME23013C0 | PP3EM23004C0 |  |  |  |  | PA | C | P3 | M1 | ME | 230 | 04 | PE | S | BILL 2 | B02 | S2 | 2F | R00 | ACF04 | PE-1 | 230 |  |  | 2n | MEP |  | M |  |
| PP3EM26005C10 |  | PA-P3 ; 2nd Fix, Wiring for Power/Lighting/Emergency (Mech RM)_PE-1 | 30d | 2011-11-22 | 2011-12-29 | PP3EM26001C10, PP3EM26002C10, PP3EM26003C10, PP3EM27001C10, PP3EM27002C10 |  |  |  |  | 250.45d | 109.58d | ELECTRICAL [33.6 h]; Cost |  |  |  |  |  |  | C04ME26005C0 | PP3EM26005C0 |  |  |  |  | PA | C | P3 | M1 | ME | 260 | 05 | PE | S | BILL 2 | B02 | S2 | 2F | R00 | ACF07 | PE-1 | 260 |  |  | 2n | MEP |  |  |  |
| PP3EM08102C10 |  | PA-P3 ; Metal Door Frames (Mech RM)_PE-1 | 10d | 2011-12-05 | 2011-12-17 | GNHE08101C0, PP3EM23004C10, PP2S103331C230, PP2S103331C240 |  |  |  |  | 247.7d | 120.83d | METAL DOORS [239 h]; Cost |  |  |  |  |  |  | C04ME08101C0 | PP3EM08102C0 |  |  |  |  | PA | C | P3 | M1 | DO | 081 | 02 | PE | S | BILL 2 | B02 | S2 | DF | R00 | ACF06 | PE-1 | 081 | 316 | 1465 |  |  |  |  | 08 |
| PP3EM21105C10 |  | PA-P3 ; 2nd Fix, Inst of Zone Control Valve (Mech RM)_PE-1 | 30d | 2011-12-05 | 2012-01-10 | PP3EM23001C10, PP3EM23004C10 |  |  |  |  | 241.7d | 100.83d | MECHANICAL [326.4 h]; Cost |  |  |  |  |  |  | C04ME21117C0 | PP3EM21105C0 |  |  |  |  | PA | C | P3 | M1 | ME | 211 | 05 | PE | S | BILL 2 | B02 | S2 | 2F | R00 | ACF07 | PE-1 | 211 |  |  | 2n | MEP |  |  |  |
| PP3EM23005C10 |  | PA-P3 ; 2nd Fix, Inst of Equipment (FCU,FAN,PUMP) (Mech RM)_PE-1 | 30d | 2011-12-05 | 2012-01-10 | PP3EM23004C10 |  |  |  |  | 211.7d | 0d | MECHANICAL [998.4 h]; Cost |  |  |  |  |  |  | C04ME23011C0 | PP3EM23005C0 |  |  |  |  | PA | C | P3 | M1 | ME | 230 | 05 | PE | S | BILL 2 | B02 | S2 | 2F | R00 | ACF04 | PE-1 | 230 |  |  | 2n | MEP |  | H |  |
| PP3EM26004C10 |  | PA-P3 ; 2nd Fix, Inst of Equipment (DB, TR, SG) (Mech RM)_PE-1 | 30d | 2011-12-05 | 2012-01-10 | PP3EM23004C10 |  |  |  |  | 241.7d | 100.83d | ELECTRICAL [530.4 h]; Cost |  |  |  |  |  |  | C04ME26009C0 | PP3EM26004C0 |  |  |  |  | PA | C | P3 | M1 | ME | 260 | 04 | PE | S | BILL 2 | B02 | S2 | 2F | R00 | ACF04 | PE-1 | 260 |  |  | 2n | MEP |  | E |  |
| PP3EM27003C10 |  | PA-P3 ; 2nd Fix, Inst of ELV Equipment (Panels) (Mech RM)_PE-1 | 30d | 2011-12-05 | 2012-01-10 | PP3EM23004C10 |  |  |  |  | 241.7d | 100.83d | ELECTRICAL [81.6 h]; Cost |  |  |  |  |  |  | C04ME27020C0 | PP3EM27003C0 |  |  |  |  | PA | C | P3 | M1 | ME | 270 | 03 | PE | S | BILL 2 | B02 | S2 | 2F | R00 | ACF04 | PE-1 | 270 |  |  | 2n | MEP |  | E |  |
| PP3EM23007C10 |  | PA-P3 ; 2nd Fix, Inst of VCD's/FD's (Mech RM)_PE-1 | 30d | 2011-12-07 | 2012-01-12 | PP3EM23002C10 |  |  |  |  | 221.7d | 98.83d | MECHANICAL [519.6 h]; Cost |  |  |  |  |  |  | C04ME23015C0 | PP3EM23007C0 |  |  |  |  | PA | C | P3 | M1 | ME | 230 | 07 | PE | S | BILL 2 | B02 | S2 | 2F | R00 | ACF07 | PE-1 | 230 |  |  | 2n | MEP |  |  |  |
| PP3EM23008C10 |  | PA-P3 ; 2nd Fix, Insulation of CHW pipe & Duct (Mech RM)_PE-1 | 30d | 2011-12-07 | 2012-01-12 | PP3EM23001C10, PP3EM23002C10 |  |  |  |  | 221.7d | 98.83d | MECHANICAL [1645.2 h]; Cost |  |  |  |  |  |  | C04ME23017C0 | PP3EM23008C0 |  |  |  |  | PA | C | P3 | M1 | ME | 230 | 08 | PE | S | BILL 2 | B02 | S2 | 2F | R00 | ACF07 | PE-1 | 230 |  |  | 2n | MEP |  |  |  |
| PP3EM21104C10 |  | PA-P3 ; 2nd Fix, Inst of Sprinkler droppers (Mech RM)_PE-1 | 30d | 2011-12-19 | 2012-01-24 | PP3EM21101C10, PAFOA09201C1, PP3EM22001C10, PP3EM22003C10, PP3EM23004C10 FS+12d |  |  |  |  | 229.7d | 88.83d | MECHANICAL [1506 h]; Cost |  |  |  |  |  |  | C04ME21115C0 | PP3EM21104C0 |  |  |  |  | PA | C | P3 | M1 | ME | 211 | 04 | PE | S | BILL 2 | B02 | S2 | 2F | R00 | ACF07 | PE-1 | 211 |  |  | 2n | MEP |  |  |  |
| PP3EM23006C10 |  | PA-P3 ; 2nd Fix, Inst of VAV'S CHW connection (Mech RM)_PE-1 | 30d | 2012-01-10 | 2012-02-15 | PP3EM23005C10 |  |  |  |  | 211.7d | 70.83d | MECHANICAL [138 h]; Cost |  |  |  |  |  |  | C04ME23009C0 | PP3EM23006C0 |  |  |  |  | PA | C | P3 | M1 | ME | 230 | 06 | PE | S | BILL 2 | B02 | S2 | 2F | R00 | ACF07 | PE-1 | 230 |  |  | 2n | MEP |  |  |  |
| PP3EM08103C10 |  | PA-P3 ; Metal Doors (Mech RM)_PE-1 | 9d | 2012-05-08 | 2012-05-19 | PP3EM08102C10, PP2S103331C230, PP2S103331C240, PP1DP09902C10 SS |  |  |  |  | 126.88d | 0d | METAL DOORS [209 h]; METAL DOORS [20.89 no]; Cost |  |  |  |  |  |  | C04ME08105C0 | PP3EM08103C0 |  |  |  |  | PA | C | P3 | M1 | DO | 081 | 03 | PE | S | BILL 2 | B02 | S2 | DR | R00 | ACF06 | PE-1 | 081 | 317 | 1466 |  |  |  |  | 08 |
| PP3EM09601C10 |  | PA-P3 ; Floor Finishes (Mech RM)_PE-1 | 16d | 2012-05-08 | 2012-05-27 | PAFOA09201C1, PP3EM22001C10, PP3EM22003C10, PP3EM23004C10 FS+12d, PP2S103331C230, PP2S103331C240, PP1DP09902C10 SS |  |  |  |  | 124.88d | 0d | ASSORTED FLOOR FINISH [10744 h]; ASSORTED FLOOR FINISH [5968 m2]; Cost |  |  |  |  |  |  | C04ME09601C0 | PP3EM09601C0 |  |  |  |  | PA | C | P3 | M1 | FF | 096 | 01 | PE | S | BILL 2 | B02 | S2 | 01 | R00 | ACF06 | PE-1 | FF | 326 | 1501 |  |  |  |  |  |
| PP3EM09901C10 |  | PA-P3 ; Wall - final Paint (Mech RM)_PE-1 | 16d | 2012-05-08 | 2012-05-27 | PP3EM09902C10, PP2S103331C230, PP2S103331C240, PP1DP09902C10 SS |  |  |  |  | 142.88d | 134.88d | WALL PAINT [1346 h]; WALL PAINT [1679.11 m2]; Cost |  |  |  |  |  |  | C04ME09903C0 | PP3EM09901C0 |  |  |  |  | PA | C | P3 | M1 | PA | 099 | 01 | PE | S | BILL 2 | B02 | S2 | 02 | R00 | ACF06 | PE-1 | 099 | 329 | 1470 |  |  |  |  |  |
| PP3EM21106C10 |  | PA-P3 ; Final Fix, Inst of Fire Extinguishers/FHC (Mech RM)_PE-1 | 18d | 2012-05-08 | 2012-05-29 | PAFOA09201C1, PP3EM22001C10, PP3EM22003C10, PP3EM23004C10 FS+12d, PP2S103331C230, PP2S103331C240, PP1DP09902C10 SS |  |  |  |  | 140.88d | 132.88d | MECHANICAL [896.4 h]; Cost |  |  |  |  |  |  | C04ME21123C0 | PP3EM21106C0 |  |  |  |  | PA | C | P3 | M1 | ME | 211 | 06 | PE | S | BILL 2 | B02 | S2 | FF | R00 | ACF07 | PE-1 | 211 |  |  | FF | MEP |  |  |  |
| PP3EM21107C10 |  | PA-P3 ; Final Fix, Inst of Sprinklers head (Mech RM)_PE-1 | 18d | 2012-05-08 | 2012-05-29 | PP3EM21104C10, PP2S103331C230, PP2S103331C240, PP1DP09902C10 SS |  |  |  |  | 140.88d | 132.88d | MECHANICAL [620.4 h]; Cost |  |  |  |  |  |  | C04ME21121C0 | PP3EM21107C0 |  |  |  |  | PA | C | P3 | M1 | ME | 211 | 07 | PE | S | BILL 2 | B02 | S2 | FF | R00 | ACF07 | PE-1 | 211 |  |  | FF | MEP |  |  |  |
| PP3EM23009C10 |  | PA-P3 ; 2nd Fix, Inst of Flexible Duct & Plenum boxes (Mech RM)_PE-1 | 18d | 2012-05-08 | 2012-05-29 | PP3EM23007C10, PP3EM23008C10, PP2S103331C230, PP2S103331C240, PP1DP09902C10 SS |  |  |  |  | 122.88d | 0d | MECHANICAL [178.8 h]; Cost |  |  |  |  |  |  | C04ME23023C0 | PP3EM23009C0 |  |  |  |  | PA | C | P3 | M1 | ME | 230 | 09 | PE | S | BILL 2 | B02 | S2 | FF | R00 | ACF07 | PE-1 | 230 |  |  | FF | MEP |  |  |  |
| PP3EM26006C10 |  | PA-P3 ; Final Fix, Inst of Ceiling rose (Mech RM)_PE-1 | 18d | 2012-05-08 | 2012-05-29 | PAFOA09201C1, PP3EM22001C10, PP3EM22003C10, PP3EM23004C10 FS+12d, PP2S103331C230, PP2S103331C240, PP1DP09902C10 SS |  |  |  |  | 140.88d | 132.88d | ELECTRICAL [10.8 h]; Cost |  |  |  |  |  |  | C04ME26015C0 | PP3EM26006C0 |  |  |  |  | PA | C | P3 | M1 | ME | 260 | 06 | PE | S | BILL 2 | B02 | S2 | FF | R00 | ACF07 | PE-1 | 260 |  |  | FF | MEP |  |  |  |
| PP3EM26007C10 |  | PA-P3 ; Final Fix, Inst of Light fittings (Mech RM)_PE-1 | 18d | 2012-05-08 | 2012-05-29 | PP3EM09902C10, PP2S103331C230, PP2S103331C240, PP1DP09902C10 SS |  |  |  |  | 140.88d | 132.88d | ELECTRICAL [1388.4 h]; Cost |  |  |  |  |  |  | C04ME26019C0 | PP3EM26007C0 |  |  |  |  | PA | C | P3 | M1 | ME | 260 | 07 | PE | S | BILL 2 | B02 | S2 | FF | R00 | ACF07 | PE-1 | 260 |  |  | FF | MEP |  |  |  |
| PP3EM26008C10 |  | PA-P3 ; Final Fix, Inst of Switch/Sockets (Mech RM)_PE-1 | 18d | 2012-05-08 | 2012-05-29 | PP3EM09902C10, PP2S103331C230, PP2S103331C240, PP1DP09902C10 SS |  |  |  |  | 140.88d | 132.88d | ELECTRICAL [55.2 h]; Cost |  |  |  |  |  |  | C04ME26017C0 | PP3EM26008C0 |  |  |  |  | PA | C | P3 | M1 | ME | 260 | 08 | PE | S | BILL 2 | B02 | S2 | FF | R00 | ACF07 | PE-1 | 260 |  |  | FF | MEP |  |  |  |
| PP3EM26009C10 |  | PA-P3 ; Final Fix, Termination & Gladding of Cables (Mech RM)_PE-1 | 18d | 2012-05-08 | 2012-05-29 | PP3EM26005C10, PAFOA09201C1, PP3EM22001C10, PP3EM22003C10, PP3EM23004C10 FS+12d, PP2S103331C230, PP2S103331C240, PP1DP09902C10 SS |  |  |  |  | 140.88d | 132.88d | ELECTRICAL [228 h]; Cost |  |  |  |  |  |  | C04ME26013C0 | PP3EM26009C0 |  |  |  |  | PA | C | P3 | M1 | ME | 260 | 09 | PE | S | BILL 2 | B02 | S2 | FF | R00 | ACF07 | PE-1 | 260 |  |  | FF | MEP |  |  |  |
| PP3EM27004C10 |  | PA-P3 ; Final Fix, BMS connection work to Equipment (Mech RM)_PE-1 | 18d | 2012-05-08 | 2012-05-29 | PP3EM21105C10, PP3EM23004C10, PP3EM23005C10, PP3EM23007C10, PP3EM26004C10, PP3EM27002C10, PP3EM27003C10, PP2S103331C230, PP2S103331C240, PP1DP09902C10 SS |  |  |  |  | 140.88d | 132.88d | ELECTRICAL [1099.2 h]; Cost |  |  |  |  |  |  | C04ME27003C0 | PP3EM27004C0 |  |  |  |  | PA | C | P3 | M1 | ME | 270 | 04 | PE | S | BILL 2 | B02 | S2 | FF | R00 | ACF07 | PE-1 | 270 |  |  | FF | MEP |  |  |  |
| PP3EM27005C10 |  | PA-P3 ; Final Fix, Inst of ELV device (Detector/Speaker) (Mech RM)_PE-1 | 18d | 2012-05-08 | 2012-05-29 | PP3EM09902C10, PP3EM23006C10, PP3EM27003C10, PP2S103331C230, PP2S103331C240, PP1DP09902C10 SS |  |  |  |  | 140.88d | 132.88d | ELECTRICAL [62.4 h]; Cost |  |  |  |  |  |  | C04ME27030C0 | PP3EM27005C0 |  |  |  |  | PA | C | P3 | M1 | ME | 270 | 05 | PE | S | BILL 2 | B02 | S2 | FF | R00 | ACF07 | PE-1 | 270 |  |  | FF | MEP |  |  |  |
| PP3EM08101C10 |  | PA-P3 ; Al / Glass doors (Mech RM)_PE-1 | 10d | 2012-05-19 | 2012-05-30 | PP3EM08103C10, PP2S103331C230, PP2S103331C240, PP1DP09902C10 SS |  |  |  |  | 126.88d | 0d | ASSORTED DOORS [347 h]; ASSORTED DOORS [34.67 no]; Cost |  |  |  |  |  |  | C04ME08109C0 | PP3EM08101C0 |  |  |  |  | PA | C | P3 | M1 | DO | 081 | 01 | PE | S | BILL 2 | B02 | S2 | 03 | R00 | ACF06 | PE-1 | 081 |  |  |  |  |  |  |  |
| PP3EM22004C10 |  | PA-P3 ; Final Fix, Inst of All drain (Mech RM)_PE-1 | 18d | 2012-05-27 | 2012-06-18 | PP3EM09601C10, PP2S103331C230, PP2S103331C240, PP1DP09902C10 SS |  |  |  |  | 124.88d | 116.88d | PLUMBING [958.8 h]; Cost |  |  |  |  |  |  | C04ME22003C0 | PP3EM22004C0 |  |  |  |  | PA | C | P3 | M1 | ME | 220 | 04 | PE | S | BILL 2 | B02 | S2 | FF | R00 | ACF07 | PE-1 | 220 |  |  | FF | MEP |  |  |  |
| PP3EM23010C10 |  | PA-P3 ; Final Fix, Inst of Grilles & Diffusers (Mech RM)_PE-1 | 18d | 2012-05-29 | 2012-06-20 | PP3EM23009C10, PP2S103331C230, PP2S103331C240, PP1DP09902C10 SS |  |  |  |  | 122.88d | 114.88d | MECHANICAL [336 h]; Cost |  |  |  |  |  |  | C04ME23021C0 | PP3EM23010C0 |  |  |  |  | PA | C | P3 | M1 | ME | 230 | 10 | PE | S | BILL 2 | B02 | S2 | FF | R00 | ACF07 | PE-1 | 230 |  |  | FF | MEP |  |  |  |
| PP3EM08701C10 |  | PA-P3 ; Ironmongery (Mech RM)_PE-1 | 13d | 2012-05-30 | 2012-06-14 | PP3EM08101C10, PP3EM08103C10, PP2S103331C230, PP2S103331C240, PP1DP09902C10 SS |  |  |  |  | 126.88d | 118.88d | IRONMONGERY [218 h]; IRONMONGERY [21.78 no]; Cost |  |  |  |  |  |  | C04ME08709C0 | PP3EM08701C0 |  |  |  |  | PA | C | P3 | M1 | DO | 087 | 01 | PE | S | BILL 2 | B02 | S2 | IM | R00 | ACF06 | PE-1 | 087 | 322 | 1467 |  |  |  |  | 08 |

| ID | WBS | Activity | Duration | Start | Finish | Predecessors | Total float | Free float | Resources | Change Order # | NEW ACTIVITY ID | change id | IDDD | CCAD BUILDING(SET) | CCAD PHASE(SET) | CCAD FLOOR(SET) | CCAD ZONE(SET) | CCAD WORK(SET) | CCAD SECTION(SET) | CCAD SERIAL No.(SET) | CCAD Carpark code(SET) | CCAD Carpark district code(set) | CCAD CBS(SET) | CCAD BILL(SET) | CCAD HANDOVER(SET) | CCAD TAG(SET) | CCAD REV(SET) | CCADACF (SET) | FSP CODE | CCAD SSCF | CCAD SUB ZONE MEP(SET) | CCAD CSA | Act Selector % | CCAD MEQ | CCAD DIVISION(SET) |
| --- | --- | --- | --- | --- | --- | --- | --- | --- | --- | --- | --- | --- | --- | --- | --- | --- | --- | --- | --- | --- | --- | --- | --- | --- | --- | --- | --- | --- | --- | --- | --- | --- | --- | --- | --- |
|  | EM2 | **MECHANICAL ROOMS (9 NOS.) ; Zone PE-2** |  | 2011-11-19 | 2012-08-29 |  |  |  |  |  |  |  |  |  |  |  |  |  |  |  |  |  |  |  |  |  |  |  |  |  |  |  |  |  |  |
| PP3EM09902C20 |  | PA-P3 ; Wall Prime & 1st coat (Mech RM)_PE-2 | 18d | 2011-11-19 | 2011-12-12 | PAFOA09201C1, PGLS203392C0 FS+24d, PGLS103391C60 FS+24d | 76.34d | 0d | WALL PAINT [2810 h]; WALL PAINT [3507.5 m2]; Cost | 328 | 1469 | C04ME09901C0 | PP3EM09902C0 | PA | C | P3 | M1 | PA | 099 | 02 | PE | S | BILL 2 | B02 | S2 | 01 | R00 | ACF06 | PE-2 | 099 |  |  |  |  |  |
| PP3EM04001C20 |  | PA-P3 ; Block Wall Works (Mech RM)_PE-2 | 30d | 2011-12-12 | 2012-01-17 | PP3EM09902C20 | 179.34d | 0d | BLOCKWORKS [2986 h]; BLOCKWORKS [853 m2]; Cost |  |  | AP3M104001C0 | PP3EM04001C0 | PA | C | P3 | M1 | BL | 040 | 01 | PE | S | BILL 2 | B02 | S2 | BL | R00 | ACF06 | PE-2 | 040 |  |  |  |  |  |
| PP3EM23003C20 |  | PA-P3 ; 1st Fix, Inst. of Supports for MEP (Mech RM)_PE-2 | 12d | 2012-01-17 | 2012-01-31 | PP3EM04001C20 | 179.34d | 0d | MECHANICAL [408 h]; Cost |  |  | C04ME23001C0 | PP3EM23003C0 | PA | C | P3 | M1 | ME | 230 | 03 | PE | S | BILL 2 | B02 | S2 | 1F | R00 | ACF04 | PE-2 | 230 | 1S | MEP | M1F |  |  |
| PP3EM21102C20 |  | PA-P3 ; 1st Fix, Inst of Sprinkler main pipe (Mech RM)_PE-2 | 30d | 2012-01-31 | 2012-03-07 | PP3EM23003C20, PP3EM04001C20 | 179.34d | 0d | MECHANICAL [4911.6 h]; Cost |  |  | C04ME21111C0 | PP3EM21102C0 | PA | C | P3 | M1 | ME | 211 | 02 | PE | S | BILL 2 | B02 | S2 | 1F | R00 | ACF04 | PE-2 | 211 | 1S | MEP | M1F |  |  |
| PP3EM22001C20 |  | PA-P3 ; 1st Fix, Inst of Drainage pipe (Mech RM)_PE-2 | 30d | 2012-01-31 | 2012-03-07 | PP3EM23003C20, PP3EM04001C20 | 269.34d | 0d | PLUMBING [1078.8 h]; Cost |  |  | C04ME22011C0 | PP3EM22001C0 | PA | C | P3 | M1 | ME | 220 | 01 | PE | S | BILL 2 | B02 | S2 | 1F | R00 | ACF04 | PE-2 | 220 | 1S | MEP | M1F |  |  |
| PP3EM22003C20 |  | PA-P3 ; 1st Fix, Inst of Water supply pipe (Mech RM)_PE-2 | 30d | 2012-01-31 | 2012-03-07 | PP3EM23003C20, PP3EM04001C20 | 269.34d | 0d | PLUMBING [3042 h]; Cost |  |  | C04ME22006C0 | PP3EM22003C0 | PA | C | P3 | M1 | ME | 220 | 03 | PE | S | BILL 2 | B02 | S2 | 1F | R00 | ACF04 | PE-2 | 220 | 1S | MEP | M1F |  |  |
| PP3EM23001C20 |  | PA-P3 ; 1st Fix, Inst of CHW pipe (Mech RM)_PE-2 | 30d | 2012-01-31 | 2012-03-07 | PP3EM23003C20, PP3EM04001C20 | 251.34d | 0d | MECHANICAL [1549.2 h]; Cost |  |  | C04ME23019C0 | PP3EM23001C0 | PA | C | P3 | M1 | ME | 230 | 01 | PE | S | BILL 2 | B02 | S2 | 1F | R00 | ACF04 | PE-2 | 230 | 1S | MEP | M1F |  |  |
| PP3EM23004C20 |  | PA-P3 ; 2nd Fix, Inst of Equipment (Mech RM)_PE-2 | 30d | 2012-01-31 | 2012-03-07 | PP3EM22001C20 FF, PP3EM22003C20 FF | 269.34d | 0d | Labor General [1.2 h]; Cost |  |  | C04ME23013C0 | PP3EM23004C0 | PA | C | P3 | M1 | ME | 230 | 04 | PE | S | BILL 2 | B02 | S2 | 2F | R00 | ACF04 | PE-2 | 230 | 2n | MEP |  | M |  |
| PP3EM08102C20 |  | PA-P3 ; Metal Door Frames (Mech RM)_PE-2 | 11d | 2012-03-07 | 2012-03-20 | GNHE08101C0, PP3EM04001C20 SS+30d, PP3EM23004C20 | 270.34d | 100d | METAL DOORS [269 h]; Cost | 316 | 1465 | C04ME08101C0 | PP3EM08102C0 | PA | C | P3 | M1 | DO | 081 | 02 | PE | S | BILL 2 | B02 | S2 | DF | R00 | ACF06 | PE-2 | 081 |  |  |  |  | 08 |
| PP3EM21101C20 |  | PA-P3 ; 1st Fix, Inst of Sprinkler branch pipe (Mech RM)_PE-2 | 30d | 2012-03-07 | 2012-04-11 | PP3EM21102C20 SS, PP3EM04001C20, PP3EM21102C20 | 239.34d | 0d | MECHANICAL [4038 h]; Cost |  |  | C04ME21119C0 | PP3EM21101C0 | PA | C | P3 | M1 | ME | 211 | 01 | PE | S | BILL 2 | B02 | S2 | 1F | R00 | ACF04 | PE-2 | 211 | 1S | MEP | M1F |  |  |
| PP3EM21105C20 |  | PA-P3 ; 2nd Fix, Inst of Zone Control Valve (Mech RM)_PE-2 | 30d | 2012-03-07 | 2012-04-11 | PP3EM23001C20, PP3EM23004C20 | 269.34d | 81d | MECHANICAL [368.4 h]; Cost |  |  | C04ME21117C0 | PP3EM21105C0 | PA | C | P3 | M1 | ME | 211 | 05 | PE | S | BILL 2 | B02 | S2 | 2F | R00 | ACF07 | PE-2 | 211 | 2n | MEP |  |  |  |
| PP3EM23002C20 |  | PA-P3 ; 1st Fix, Inst of Ducting (Mech RM)_PE-2 | 30d | 2012-03-07 | 2012-04-11 | PP3EM23003C20, PP3EM04001C20, PP3EM21102C20 | 179.34d | 0d | MECHANICAL [1974 h]; Cost |  |  | C04ME23005C0 | PP3EM23002C0 | PA | C | P3 | M1 | ME | 230 | 02 | PE | S | BILL 2 | B02 | S2 | 1F | R00 | ACF04 | PE-2 | 230 | 1S | MEP | M1F |  |  |
| PP3EM23005C20 |  | PA-P3 ; 2nd Fix, Inst of Equipment (FCU,FAN,PUMP) (Mech RM)_PE-2 | 30d | 2012-03-07 | 2012-04-11 | PP3EM23004C20 | 269.34d | 0d | MECHANICAL [1123.2 h]; Cost |  |  | C04ME23011C0 | PP3EM23005C0 | PA | C | P3 | M1 | ME | 230 | 05 | PE | S | BILL 2 | B02 | S2 | 2F | R00 | ACF04 | PE-2 | 230 | 2n | MEP |  | H |  |
| PP3EM23006C20 |  | PA-P3 ; 2nd Fix, Inst of VAV'S CHW connection (Mech RM)_PE-2 | 30d | 2012-03-07 | 2012-04-11 | PP3EM23005C20 FF | 269.34d | 81d | MECHANICAL [154.8 h]; Cost |  |  | C04ME23009C0 | PP3EM23006C0 | PA | C | P3 | M1 | ME | 230 | 06 | PE | S | BILL 2 | B02 | S2 | 2F | R00 | ACF07 | PE-2 | 230 | 2n | MEP |  |  |  |
| PP3EM26004C20 |  | PA-P3 ; 2nd Fix, Inst of Equipment (DB, TR, SG) (Mech RM)_PE-2 | 30d | 2012-03-07 | 2012-04-11 | PP3EM23004C20 | 269.34d | 81d | ELECTRICAL [596.4 h]; Cost |  |  | C04ME26009C0 | PP3EM26004C0 | PA | C | P3 | M1 | ME | 260 | 04 | PE | S | BILL 2 | B02 | S2 | 2F | R00 | ACF04 | PE-2 | 260 | 2n | MEP |  | E |  |
| PP3EM27003C20 |  | PA-P3 ; 2nd Fix, Inst of ELV Equipment (Panels) (Mech RM)_PE-2 | 30d | 2012-03-07 | 2012-04-11 | PP3EM23004C20 | 269.34d | 81d | ELECTRICAL [92.4 h]; Cost |  |  | C04ME27020C0 | PP3EM27003C0 | PA | C | P3 | M1 | ME | 270 | 03 | PE | S | BILL 2 | B02 | S2 | 2F | R00 | ACF04 | PE-2 | 270 | 2n | MEP |  | E |  |
| PP3EM21104C20 |  | PA-P3 ; 2nd Fix, Inst of Sprinkler droppers (Mech RM)_PE-2 | 30d | 2012-04-11 | 2012-05-16 | PP3EM21101C20, PAFOA09201C1, PP3EM22001C20, PP3EM22003C20, PP3EM04001C20 SS+42d | 239.34d | 51d | MECHANICAL [1694.4 h]; Cost |  |  | C04ME21115C0 | PP3EM21104C0 | PA | C | P3 | M1 | ME | 211 | 04 | PE | S | BILL 2 | B02 | S2 | 2F | R00 | ACF07 | PE-2 | 211 | 2n | MEP |  |  |  |
| PP3EM23007C20 |  | PA-P3 ; 2nd Fix, Inst of VCD's/FD's (Mech RM)_PE-2 | 30d | 2012-04-11 | 2012-05-16 | PP3EM23002C20 | 221.34d | 0d | MECHANICAL [584.4 h]; Cost |  |  | C04ME23015C0 | PP3EM23007C0 | PA | C | P3 | M1 | ME | 230 | 07 | PE | S | BILL 2 | B02 | S2 | 2F | R00 | ACF07 | PE-2 | 230 | 2n | MEP |  |  |  |
| PP3EM23008C20 |  | PA-P3 ; 2nd Fix, Insulation of CHW pipe & Duct (Mech RM)_PE-2 | 30d | 2012-04-11 | 2012-05-16 | PP3EM23001C20, PP3EM23002C20 | 221.34d | 0d | MECHANICAL [1851.6 h]; Cost |  |  | C04ME23017C0 | PP3EM23008C0 | PA | C | P3 | M1 | ME | 230 | 08 | PE | S | BILL 2 | B02 | S2 | 2F | R00 | ACF07 | PE-2 | 230 | 2n | MEP |  |  |  |
| PP3EM26001C20 |  | PA-P3 ; 1st Fix, Inst of Cable Tray (Mech RM)_PE-2 | 30d | 2012-04-11 | 2012-05-16 | PP3EM04001C20, PP3EM23002C20 | 179.34d | 0d | ELECTRICAL [32.4 h]; Cost |  |  | C04ME26011C0 | PP3EM26001C0 | PA | C | P3 | M1 | ME | 260 | 01 | PE | S | BILL 2 | B02 | S2 | 1F | R00 | ACF04 | PE-2 | 260 | 1S | MEP | M1F |  |  |
| PP3EM26002C20 |  | PA-P3 ; 1st Fix, Inst of Trunking/Conduiting (Mech RM)_PE-2 | 30d | 2012-04-11 | 2012-05-16 | PP3EM23003C20, PP3EM04001C20, PP3EM23002C20 | 209.34d | 30d | ELECTRICAL [283.2 h]; Cost |  |  | C04ME26001C0 | PP3EM26002C0 | PA | C | P3 | M1 | ME | 260 | 02 | PE | S | BILL 2 | B02 | S2 | 1F | R00 | ACF04 | PE-2 | 260 | 1S | MEP | M1F |  |  |
| PP3EM27001C20 |  | PA-P3 ; 1st Fix, Inst of Trunking for ELV system (Mech RM)_PE-2 | 30d | 2012-04-11 | 2012-05-16 | PP3EM23002C20 SS, PP3EM04001C20, PP3EM23002C20 | 179.34d | 0d | ELECTRICAL [267.6 h]; Cost |  |  | C04ME27010C0 | PP3EM27001C0 | PA | C | P3 | M1 | ME | 270 | 01 | PE | S | BILL 2 | B02 | S2 | 1F | R00 | ACF04 | PE-2 | 270 | 1S | MEP | M1F |  |  |
| PP3EM23009C20 |  | PA-P3 ; 2nd Fix, Inst of Flexible Duct & Plenum boxes (Mech RM)_PE-2 | 18d | 2012-05-16 | 2012-06-06 | PP3EM23007C20, PP3EM23008C20 | 221.34d | 33d | MECHANICAL [201.6 h]; Cost |  |  | C04ME23023C0 | PP3EM23009C0 | PA | C | P3 | M1 | ME | 230 | 09 | PE | S | BILL 2 | B02 | S2 | FF | R00 | ACF07 | PE-2 | 230 | FF | MEP |  |  |  |
| PP3EM26003C20 |  | PA-P3 ; 2nd Fix, Cable Pulling (Mech RM)_PE-2 | 30d | 2012-05-16 | 2012-06-21 | PP3EM26001C20 | 179.34d | 0d | ELECTRICAL [2236.8 h]; Cost |  |  | C04ME26007C0 | PP3EM26003C0 | PA | C | P3 | M1 | ME | 260 | 03 | PE | S | BILL 2 | B02 | S2 | 2F | R00 | ACF07 | PE-2 | 260 | 2n | MEP |  |  |  |
| PP3EM27002C20 |  | PA-P3 ; 1st Fix, Wiring/ Cabling work (Mech RM)_PE-2 | 30d | 2012-05-16 | 2012-06-21 | PP3EM26001C20 SS, PP3EM26002C20 SS, PP3EM27001C20 SS, PP3EM04001C20, PP3EM27001C20 | 179.34d | 0d | ELECTRICAL [38.4 h]; Cost |  |  | C04ME27001C0 | PP3EM27002C0 | PA | C | P3 | M1 | ME | 270 | 02 | PE | S | BILL 2 | B02 | S2 | 1F | R00 | ACF04 | PE-2 | 270 | 1S | MEP | M1F |  |  |
| PP3EM26005C20 |  | PA-P3 ; 2nd Fix, Wiring for Power/Lighting/Emergency (Mech RM)_PE-2 | 30d | 2012-06-21 | 2012-07-26 | PP3EM26001C20, PP3EM26002C20, PP3EM26003C20, PP3EM27001C20, PP3EM27002C20 | 179.34d | 0d | ELECTRICAL [38.4 h]; Cost |  |  | C04ME26005C0 | PP3EM26005C0 | PA | C | P3 | M1 | ME | 260 | 05 | PE | S | BILL 2 | B02 | S2 | 2F | R00 | ACF07 | PE-2 | 260 | 2n | MEP |  |  |  |
| PP3EM08103C20 |  | PA-P3 ; Metal Doors (Mech RM)_PE-2 | 10d | 2012-07-16 | 2012-07-28 | PP3EM08102C20, PGLS103391C250, PGLS103331C270, PP1EM26008C0 SS | 170.34d | 0d | METAL DOORS [235 h]; METAL DOORS [23.5 no]; Cost | 317 | 1466 | C04ME08105C0 | PP3EM08103C0 | PA | C | P3 | M1 | DO | 081 | 03 | PE | S | BILL 2 | B02 | S2 | DR | R00 | ACF06 | PE-2 | 081 |  |  |  |  | 08 |
| PP3EM09601C20 |  | PA-P3 ; Floor Finishes (Mech RM)_PE-2 | 18d | 2012-07-16 | 2012-08-06 | PAFOA09201C1, PP3EM22001C20, PP3EM22003C20, PP3EM04001C20 SS+42d, PP3EM23004C20 FS+12d, PGLS103391C250, PGLS103331C270, PP1EM26008C0 SS | 170.34d | 0d | ASSORTED FLOOR FINISH [12088 h]; ASSORTED FLOOR FINISH [6714 m2]; Cost | 326 | 1501 | C04ME09601C0 | PP3EM09601C0 | PA | C | P3 | M1 | FF | 096 | 01 | PE | S | BILL 2 | B02 | S2 | 01 | R00 | ACF06 | PE-2 | FF |  |  |  |  |  |
| PP3EM21106C20 |  | PA-P3 ; Final Fix, Inst of Fire Extinguishers/FHC (Mech RM)_PE-2 | 18d | 2012-07-16 | 2012-08-06 | PAFOA09201C1, PP3EM22001C20, PP3EM22003C20, PP3EM23004C20 FS+12d, PGLS103391C250, PGLS103331C270, PP1EM26008C0 SS | 188.34d | 120.27d | MECHANICAL [1008 h]; Cost |  |  | C04ME21123C0 | PP3EM21106C0 | PA | C | P3 | M1 | ME | 211 | 06 | PE | S | BILL 2 | B02 | S2 | FF | R00 | ACF07 | PE-2 | 211 | FF | MEP |  |  |  |
| PP3EM21107C20 |  | PA-P3 ; Final Fix, Inst of Sprinklers head (Mech RM)_PE-2 | 18d | 2012-07-16 | 2012-08-06 | PP3EM21104C20, PGLS103391C250, PGLS103331C270, PP3EM27005C20 FF, PP1EM26008C0 SS | 188.34d | 120.27d | MECHANICAL [698.4 h]; Cost |  |  | C04ME21121C0 | PP3EM21107C0 | PA | C | P3 | M1 | ME | 211 | 07 | PE | S | BILL 2 | B02 | S2 | FF | R00 | ACF07 | PE-2 | 211 | FF | MEP |  |  |  |
| PP3EM23010C20 |  | PA-P3 ; Final Fix, Inst of Grilles & Diffusers (Mech RM)_PE-2 | 18d | 2012-07-16 | 2012-08-06 | PP3EM23009C20, PGLS103391C250, PGLS103331C270, PP1EM26008C0 SS | 188.34d | 120.27d | MECHANICAL [378 h]; Cost |  |  | C04ME23021C0 | PP3EM23010C0 | PA | C | P3 | M1 | ME | 230 | 10 | PE | S | BILL 2 | B02 | S2 | FF | R00 | ACF07 | PE-2 | 230 | FF | MEP |  |  |  |
| PP3EM26006C20 |  | PA-P3 ; Final Fix, Inst of Ceiling rose (Mech RM)_PE-2 | 18d | 2012-07-16 | 2012-08-06 | PAFOA09201C1, PP3EM22001C20, PP3EM22003C20, PP3EM04001C20 SS+42d, PP3EM23004C20 FS+12d, PGLS103391C250, PGLS103331C270, PP1EM26008C0 SS | 188.34d | 120.27d | ELECTRICAL [13.2 h]; Cost |  |  | C04ME26015C0 | PP3EM26006C0 | PA | C | P3 | M1 | ME | 260 | 06 | PE | S | BILL 2 | B02 | S2 | FF | R00 | ACF07 | PE-2 | 260 | FF | MEP |  |  |  |
| PP3EM27004C20 |  | PA-P3 ; Final Fix, BMS connection work to Equipment (Mech RM)_PE-2 | 18d | 2012-07-16 | 2012-08-06 | PP3EM21105C20, PP3EM23004C20, PP3EM23005C20, PP3EM23007C20, PP3EM26004C20, PP3EM27002C20, PP3EM27003C20, PGLS103391C250, PGLS103331C270, PP1EM26008C0 SS | 188.34d | 120.27d | ELECTRICAL [1237.2 h]; Cost |  |  | C04ME27003C0 | PP3EM27004C0 | PA | C | P3 | M1 | ME | 270 | 04 | PE | S | BILL 2 | B02 | S2 | FF | R00 | ACF07 | PE-2 | 270 | FF | MEP |  |  |  |
| PP3EM27005C20 |  | PA-P3 ; Final Fix, Inst of ELV device (Detector/Speaker) (Mech RM)_PE-2 | 18d | 2012-07-16 | 2012-08-06 | PP3EM09902C20, PP3EM23006C20, PP3EM27003C20, PGLS103391C250, PGLS103331C270, PP1EM26008C0 SS | 188.34d | 0d | ELECTRICAL [70.8 h]; Cost |  |  | C04ME27030C0 | PP3EM27005C0 | PA | C | P3 | M1 | ME | 270 | 05 | PE | S | BILL 2 | B02 | S2 | FF | R00 | ACF07 | PE-2 | 270 | FF | MEP |  |  |  |
| PP3EM09901C20 |  | PA-P3 ; Wall - final Paint (Mech RM)_PE-2 | 17.88d | 2012-07-16 | 2012-08-06 | PP3EM09902C20, PGLS103391C250, PGLS103331C270, PP3EM09601C20 FF, PP1EM26008C0 SS | 188.34d | 120.27d | WALL PAINT [1514 h]; WALL PAINT [1889 m2]; Cost | 329 | 1470 | C04ME09903C0 | PP3EM09901C0 | PA | C | P3 | M1 | PA | 099 | 01 | PE | S | BILL 2 | B02 | S2 | 02 | R00 | ACF06 | PE-2 | 099 |  |  |  |  |  |
| PP3EM26007C20 |  | PA-P3 ; Final Fix, Inst of Light fittings (Mech RM)_PE-2 | 18d | 2012-07-26 | 2012-08-16 | PP3EM09902C20, PGLS103391C250, PGLS103331C270, PP3EM26009C20 FF, PP1EM26008C0 SS | 179.34d | 111.27d | ELECTRICAL [1562.4 h]; Cost |  |  | C04ME26019C0 | PP3EM26007C0 | PA | C | P3 | M1 | ME | 260 | 07 | PE | S | BILL 2 | B02 | S2 | FF | R00 | ACF07 | PE-2 | 260 | FF | MEP |  |  |  |
| PP3EM26008C20 |  | PA-P3 ; Final Fix, Inst of Switch/Sockets (Mech RM)_PE-2 | 18d | 2012-07-26 | 2012-08-16 | PP3EM09902C20, PGLS103391C250, PGLS103331C270, PP3EM26009C20 FF, PP1EM26008C0 SS | 179.34d | 111.27d | ELECTRICAL [62.4 h]; Cost |  |  | C04ME26017C0 | PP3EM26008C0 | PA | C | P3 | M1 | ME | 260 | 08 | PE | S | BILL 2 | B02 | S2 | FF | R00 | ACF07 | PE-2 | 260 | FF | MEP |  |  |  |
| PP3EM26009C20 |  | PA-P3 ; Final Fix, Termination & Gladding of Cables (Mech RM)_PE-2 | 18d | 2012-07-26 | 2012-08-16 | PP3EM26005C20, PAFOA09201C1, PP3EM22001C20, PP3EM22003C20, PP3EM04001C20 SS+42d, PP3EM23004C20 FS+12d, PGLS103391C250, PGLS103331C270, PP1EM26008C0 SS | 179.34d | 0d | ELECTRICAL [256.8 h]; Cost |  |  | C04ME26013C0 | PP3EM26009C0 | PA | C | P3 | M1 | ME | 260 | 09 | PE | S | BILL 2 | B02 | S2 | FF | R00 | ACF07 | PE-2 | 260 | FF | MEP |  |  |  |
| PP3EM08101C20 |  | PA-P3 ; Al / Glass doors (Mech RM)_PE-2 | 11d | 2012-07-28 | 2012-08-09 | PP3EM08103C20, PGLS103391C250, PGLS103331C270, PP1EM26008C0 SS | 170.34d | 0d | ASSORTED DOORS [390 h]; ASSORTED DOORS [39 no]; Cost |  |  | C04ME08109C0 | PP3EM08101C0 | PA | C | P3 | M1 | DO | 081 | 01 | PE | S | BILL 2 | B02 | S2 | 03 | R00 | ACF06 | PE-2 | 081 |  |  |  |  |  |
| PP3EM22004C20 |  | PA-P3 ; Final Fix, Inst of All drain (Mech RM)_PE-2 | 18d | 2012-08-06 | 2012-08-29 | PP3EM09601C20, PGLS103391C250, PGLS103331C270, PP1EM26008C0 SS | 170.34d | 102.27d | PLUMBING [1078.8 h]; Cost |  |  | C04ME22003C0 | PP3EM22004C0 | PA | C | P3 | M1 | ME | 220 | 04 | PE | S | BILL 2 | B02 | S2 | FF | R00 | ACF07 | PE-2 | 220 | FF | MEP |  |  |  |
| PP3EM08701C20 |  | PA-P3 ; Ironmongery (Mech RM)_PE-2 | 15d | 2012-08-09 | 2012-08-29 | PP3EM08101C20, PP3EM08103C20, PGLS103391C250, PGLS103331C270, PP1EM26008C0 SS | 170.34d | 102.27d | IRONMONGERY [245 h]; IRONMONGERY [24.5 no]; Cost | 322 | 1467 | C04ME08709C0 | PP3EM08701C0 | PA | C | P3 | M1 | DO | 087 | 01 | PE | S | BILL 2 | B02 | S2 | IM | R00 | ACF06 | PE-2 | 087 |  |  |  |  | 08 |

| ID | WBS | Activity | Duration | Start | Finish | Predecessors | Total float | Free float | Resources | Change Order # | NEW ACTIVITY ID | change id | IDDD | CCAD BUILDING(SET) | CCAD PHASE(SET) | CCAD FLOOR(SET) | CCAD ZONE(SET) | CCAD WORK(SET) | CCAD SECTION(SET) | CCAD SERIAL No.(SET) | CCAD Carpark code(SET) | CCAD Carpark district code(set) | CCAD CBS(SET) | CCAD BILL(SET) | CCAD HANDOVER(SET) | CCAD TAG(SET) | CCAD REV(SET) | CCADACF (SET) | FSP CODE | CCAD SSCF | CCAD SUB ZONE MEP(SET) | CCAD CSA | Act Selector % | July2011 Target% Complete | CCAD MEQ | CCAD DIVISION(SET) |
| --- | --- | --- | --- | --- | --- | --- | --- | --- | --- | --- | --- | --- | --- | --- | --- | --- | --- | --- | --- | --- | --- | --- | --- | --- | --- | --- | --- | --- | --- | --- | --- | --- | --- | --- | --- | --- |
|  | EM3 | **MECHANICAL ROOMS (1 NOS.) ; Zone PE-3** |  | 2011-10-03 | 2012-09-25 |  |  |  |  |  |  |  |  |  |  |  |  |  |  |  |  |  |  |  |  |  |  |  |  |  |  |  |  |  |  |  |
| PP3EM09902C0 |  | PA-P3 ; Wall Prime & 1st coat (Mech RM)_PE-3 | 18d | 2011-10-03 | 2011-10-24 | PAFOA09201C1, PGLS103393C0 FS+24d, PGLS103391C80 SS+24d | 160.3d | 0d | WALL PAINT [313 h]; WALL PAINT [389.72 m2]; Cost | 328 | 1469 | C04ME09901C0 | PP3EM09902C0 | PA | C | P3 | M1 | PA | 099 | 02 | PE | S | BILL 2 | B02 | S2 | 01 | R00 | ACF06 | PE-3 | 099 |  |  |  |  |  |  |
| PP3EM04001C0 |  | PA-P3 ; Block Wall Works (Mech RM)_PE-3 | 30d | 2011-10-24 | 2011-12-04 | PP3EM09902C0 | 160.3d | 0d | BLOCKWORKS [332 h]; BLOCKWORKS [94.78 m2]; Cost |  |  | AP3M104001C0 | PP3EM04001C0 | PA | C | P3 | M1 | BL | 040 | 01 | PE | S | BILL 2 | B02 | S2 | BL | R00 | ACF06 | PE-3 | 040 |  |  |  |  |  |  |
| PP3EM23003C0 |  | PA-P3 ; 1st Fix, Inst. of Supports for MEP (Mech RM)_PE-3 | 12d | 2011-12-04 | 2011-12-18 | PP3EM04001C0 | 160.3d | 0d | MECHANICAL [45.6 h]; Cost |  |  | C04ME23001C0 | PP3EM23003C0 | PA | C | P3 | M1 | ME | 230 | 03 | PE | S | BILL 2 | B02 | S2 | 1F | R00 | ACF04 | PE-3 | 230 | 1S | MEP | M1F |  |  |  |
| PP3EM21102C0 |  | PA-P3 ; 1st Fix, Inst of Sprinkler main pipe (Mech RM)_PE-3 | 30d | 2011-12-18 | 2012-01-23 | PP3EM23003C0, PP3EM04001C0 | 160.3d | 0d | MECHANICAL [546 h]; Cost |  |  | C04ME21111C0 | PP3EM21102C0 | PA | C | P3 | M1 | ME | 211 | 02 | PE | S | BILL 2 | B02 | S2 | 1F | R00 | ACF04 | PE-3 | 211 | 1S | MEP | M1F |  |  |  |
| PP3EM22001C0 |  | PA-P3 ; 1st Fix, Inst of Drainage pipe (Mech RM)_PE-3 | 30d | 2011-12-18 | 2012-01-23 | PP3EM23003C0, PP3EM04001C0 | 250.3d | 0d | PLUMBING [120 h]; Cost |  |  | C04ME22011C0 | PP3EM22001C0 | PA | C | P3 | M1 | ME | 220 | 01 | PE | S | BILL 2 | B02 | S2 | 1F | R00 | ACF04 | PE-3 | 220 | 1S | MEP | M1F | 15 |  |  |
| PP3EM22003C0 |  | PA-P3 ; 1st Fix, Inst of Water supply pipe (Mech RM)_PE-3 | 30d | 2011-12-18 | 2012-01-23 | PP3EM23003C0, PP3EM04001C0 | 250.3d | 0d | PLUMBING [338.4 h]; Cost |  |  | C04ME22006C0 | PP3EM22003C0 | PA | C | P3 | M1 | ME | 220 | 03 | PE | S | BILL 2 | B02 | S2 | 1F | R00 | ACF04 | PE-3 | 220 | 1S | MEP | M1F | 85 |  |  |
| PP3EM23001C0 |  | PA-P3 ; 1st Fix, Inst of CHW pipe (Mech RM)_PE-3 | 30d | 2011-12-18 | 2012-01-23 | PP3EM23003C0, PP3EM04001C0 | 232.3d | 0d | MECHANICAL [171.6 h]; Cost |  |  | C04ME23019C0 | PP3EM23001C0 | PA | C | P3 | M1 | ME | 230 | 01 | PE | S | BILL 2 | B02 | S2 | 1F | R00 | ACF04 | PE-3 | 230 | 1S | MEP | M1F |  |  |  |
| PP3EM23004C0 |  | PA-P3 ; 2nd Fix, Inst of Equipment (Mech RM)_PE-3 | 30d | 2011-12-18 | 2012-01-23 | PP3EM22001C0 FF, PP3EM22003C0 FF | 250.3d | 0d | Labor General [1.2 h]; Cost |  |  | C04ME23013C0 | PP3EM23004C0 | PA | C | P3 | M1 | ME | 230 | 04 | PE | S | BILL 2 | B02 | S2 | 2F | R00 | ACF04 | PE-3 | 230 | 2n | MEP |  |  | M |  |
| PP3EM08102C0 |  | PA-P3 ; Metal Door Frames (Mech RM)_PE-3 | 0.99d | 2012-01-23 | 2012-01-24 | GNHE08101C0, PP3EM04001C0 SS+30d, PP3EM23004C0 | 293.31d | 170.11d | METAL DOORS [30 h]; Cost | 316 | 1465 | C04ME08101C0 | PP3EM08102C0 | PA | C | P3 | M1 | DO | 081 | 02 | PE | S | BILL 2 | B02 | S2 | DF | R00 | ACF06 | PE-3 | 081 |  |  |  |  |  | 08 |
| PP3EM21101C0 |  | PA-P3 ; 1st Fix, Inst of Sprinkler branch pipe (Mech RM)_PE-3 | 30d | 2012-01-23 | 2012-02-28 | PP3EM04001C0, PP3EM21102C0 | 220.3d | 0d | MECHANICAL [448.8 h]; Cost |  |  | C04ME21119C0 | PP3EM21101C0 | PA | C | P3 | M1 | ME | 211 | 01 | PE | S | BILL 2 | B02 | S2 | 1F | R00 | ACF04 | PE-3 | 211 | 1S | MEP | M1F |  |  |  |
| PP3EM21105C0 |  | PA-P3 ; 2nd Fix, Inst of Zone Control Valve (Mech RM)_PE-3 | 30d | 2012-01-23 | 2012-02-28 | PP3EM23001C0, PP3EM23004C0 | 250.3d | 141.1d | MECHANICAL [40.8 h]; Cost |  |  | C04ME21117C0 | PP3EM21105C0 | PA | C | P3 | M1 | ME | 211 | 05 | PE | S | BILL 2 | B02 | S2 | 2F | R00 | ACF07 | PE-3 | 211 | 2n | MEP |  |  |  |  |
| PP3EM23002C0 |  | PA-P3 ; 1st Fix, Inst of Ducting (Mech RM)_PE-3 | 30d | 2012-01-23 | 2012-02-28 | PP3EM23003C0, PP3EM04001C0, PP3EM21102C0 | 160.3d | 0d | MECHANICAL [219.6 h]; Cost |  |  | C04ME23005C0 | PP3EM23002C0 | PA | C | P3 | M1 | ME | 230 | 02 | PE | S | BILL 2 | B02 | S2 | 1F | R00 | ACF04 | PE-3 | 230 | 1S | MEP | M1F |  |  |  |
| PP3EM23005C0 |  | PA-P3 ; 2nd Fix, Inst of Equipment (FCU,FAN,PUMP) (Mech RM)_PE-3 | 30d | 2012-01-23 | 2012-02-28 | PP3EM23004C0 | 250.3d | 0d | MECHANICAL [124.8 h]; Cost |  |  | C04ME23011C0 | PP3EM23005C0 | PA | C | P3 | M1 | ME | 230 | 05 | PE | S | BILL 2 | B02 | S2 | 2F | R00 | ACF04 | PE-3 | 230 | 2n | MEP |  |  | H |  |
| PP3EM23006C0 |  | PA-P3 ; 2nd Fix, Inst of VAV'S CHW connection (Mech RM)_PE-3 | 30d | 2012-01-23 | 2012-02-28 | PP3EM23005C0 FF | 250.3d | 141.1d | MECHANICAL [16.8 h]; Cost |  |  | C04ME23009C0 | PP3EM23006C0 | PA | C | P3 | M1 | ME | 230 | 06 | PE | S | BILL 2 | B02 | S2 | 2F | R00 | ACF07 | PE-3 | 230 | 2n | MEP |  |  |  |  |
| PP3EM26004C0 |  | PA-P3 ; 2nd Fix, Inst of Equipment (DB, TR, SG) (Mech RM)_PE-3 | 30d | 2012-01-23 | 2012-02-28 | PP3EM23004C0 | 250.3d | 141.1d | ELECTRICAL [66 h]; Cost |  |  | C04ME26009C0 | PP3EM26004C0 | PA | C | P3 | M1 | ME | 260 | 04 | PE | S | BILL 2 | B02 | S2 | 2F | R00 | ACF04 | PE-3 | 260 | 2n | MEP |  |  | E |  |
| PP3EM27003C0 |  | PA-P3 ; 2nd Fix, Inst of ELV Equipment (Panels) (Mech RM)_PE-3 | 30d | 2012-01-23 | 2012-02-28 | PP3EM23004C0 | 250.3d | 141.1d | ELECTRICAL [10.8 h]; Cost |  |  | C04ME27020C0 | PP3EM27003C0 | PA | C | P3 | M1 | ME | 270 | 03 | PE | S | BILL 2 | B02 | S2 | 2F | R00 | ACF04 | PE-3 | 270 | 2n | MEP |  |  | E |  |
| PP3EM21104C0 |  | PA-P3 ; 2nd Fix, Inst of Sprinkler droppers (Mech RM)_PE-3 | 30d | 2012-02-28 | 2012-04-03 | PP3EM21101C0, PAFOA09201C1, PP3EM22001C0, PP3EM22003C0 | 220.3d | 111.1d | MECHANICAL [188.4 h]; Cost |  |  | C04ME21115C0 | PP3EM21104C0 | PA | C | P3 | M1 | ME | 211 | 04 | PE | S | BILL 2 | B02 | S2 | 2F | R00 | ACF07 | PE-3 | 211 | 2n | MEP |  |  |  |  |
| PP3EM23007C0 |  | PA-P3 ; 2nd Fix, Inst of VCD's/FD's (Mech RM)_PE-3 | 30d | 2012-02-28 | 2012-04-03 | PP3EM23002C0 | 202.3d | 0d | MECHANICAL [64.8 h]; Cost |  |  | C04ME23015C0 | PP3EM23007C0 | PA | C | P3 | M1 | ME | 230 | 07 | PE | S | BILL 2 | B02 | S2 | 2F | R00 | ACF07 | PE-3 | 230 | 2n | MEP |  |  |  |  |
| PP3EM23008C0 |  | PA-P3 ; 2nd Fix, Insulation of CHW pipe & Duct (Mech RM)_PE-3 | 30d | 2012-02-28 | 2012-04-03 | PP3EM23001C0, PP3EM23002C0 | 202.3d | 0d | MECHANICAL [205.2 h]; Cost |  |  | C04ME23017C0 | PP3EM23008C0 | PA | C | P3 | M1 | ME | 230 | 08 | PE | S | BILL 2 | B02 | S2 | 2F | R00 | ACF07 | PE-3 | 230 | 2n | MEP |  |  |  |  |
| PP3EM26001C0 |  | PA-P3 ; 1st Fix, Inst of Cable Tray (Mech RM)_PE-3 | 30d | 2012-02-28 | 2012-04-03 | PP3EM04001C0, PP3EM23002C0 | 160.3d | 0d | ELECTRICAL [3.6 h]; Cost |  |  | C04ME26011C0 | PP3EM26001C0 | PA | C | P3 | M1 | ME | 260 | 01 | PE | S | BILL 2 | B02 | S2 | 1F | R00 | ACF04 | PE-3 | 260 | 1S | MEP | M1F |  |  |  |
| PP3EM26002C0 |  | PA-P3 ; 1st Fix, Inst of Trunking/Conduiting (Mech RM)_PE-3 | 30d | 2012-02-28 | 2012-04-03 | PP3EM23003C0, PP3EM04001C0, PP3EM23002C0 | 190.3d | 30d | ELECTRICAL [31.2 h]; Cost |  |  | C04ME26001C0 | PP3EM26002C0 | PA | C | P3 | M1 | ME | 260 | 02 | PE | S | BILL 2 | B02 | S2 | 1F | R00 | ACF04 | PE-3 | 260 | 1S | MEP | M1F |  |  |  |
| PP3EM27001C0 |  | PA-P3 ; 1st Fix, Inst of Trunking for ELV system (Mech RM)_PE-3 | 30d | 2012-02-28 | 2012-04-03 | PP3EM23002C0 SS, PP3EM04001C0, PP3EM23002C0 | 160.3d | 0d | ELECTRICAL [30 h]; Cost |  |  | C04ME27010C0 | PP3EM27001C0 | PA | C | P3 | M1 | ME | 270 | 01 | PE | S | BILL 2 | B02 | S2 | 1F | R00 | ACF04 | PE-3 | 270 | 1S | MEP | M1F |  |  |  |
| PP3EM23009C0 |  | PA-P3 ; 2nd Fix, Inst of Flexible Duct & Plenum boxes (Mech RM)_PE-3 | 18d | 2012-04-03 | 2012-04-24 | PP3EM23007C0, PP3EM23008C0 | 202.3d | 93.1d | MECHANICAL [22.8 h]; Cost |  |  | C04ME23023C0 | PP3EM23009C0 | PA | C | P3 | M1 | ME | 230 | 09 | PE | S | BILL 2 | B02 | S2 | FF | R00 | ACF07 | PE-3 | 230 | FF | MEP |  |  |  |  |
| PP3EM26003C0 |  | PA-P3 ; 2nd Fix, Cable Pulling (Mech RM)_PE-3 | 30d | 2012-04-03 | 2012-05-08 | PP3EM26001C0 | 160.3d | 0d | ELECTRICAL [248.4 h]; Cost |  |  | C04ME26007C0 | PP3EM26003C0 | PA | C | P3 | M1 | ME | 260 | 03 | PE | S | BILL 2 | B02 | S2 | 2F | R00 | ACF07 | PE-3 | 260 | 2n | MEP |  |  |  |  |
| PP3EM27002C0 |  | PA-P3 ; 1st Fix, Wiring/ Cabling work (Mech RM)_PE-3 | 30d | 2012-04-03 | 2012-05-08 | PP3EM26001C0 SS, PP3EM26002C0 SS, PP3EM04001C0, PP3EM27001C0 | 160.3d | 0d | ELECTRICAL [4.8 h]; Cost |  |  | C04ME27001C0 | PP3EM27002C0 | PA | C | P3 | M1 | ME | 270 | 02 | PE | S | BILL 2 | B02 | S2 | 1F | R00 | ACF04 | PE-3 | 270 | 1S | MEP | M1F |  |  |  |
| PP3EM26005C0 |  | PA-P3 ; 2nd Fix, Wiring for Power/Lighting/Emergency (Mech RM)_PE-3 | 30d | 2012-05-08 | 2012-06-12 | PP3EM26001C0, PP3EM26002C0, PP3EM26003C0, PP3EM27001C0, PP3EM27002C0 | 160.3d | 51.1d | ELECTRICAL [4.8 h]; Cost |  |  | C04ME26005C0 | PP3EM26005C0 | PA | C | P3 | M1 | ME | 260 | 05 | PE | S | BILL 2 | B02 | S2 | 2F | R00 | ACF07 | PE-3 | 260 | 2n | MEP |  |  |  |  |
| PP3EM21106C0 |  | PA-P3 ; Final Fix, Inst of Fire Extinguishers/FHC (Mech RM)_PE-3 | 18d | 2012-07-22 | 2012-08-12 | PAFOA09201C1, PP3EM22001C0, PP3EM22003C0, PP3EM23004C0 FS+12d, PP3DP21113C20 SF | 127.2d | 115.12d | MECHANICAL [111.6 h]; Cost |  |  | C04ME21123C0 | PP3EM21106C0 | PA | C | P3 | M1 | ME | 211 | 06 | PE | S | BILL 2 | B02 | S2 | FF | R00 | ACF07 | PE-3 | 211 | FF | MEP |  |  |  |  |
| PP3EM08103C0 |  | PA-P3 ; Metal Doors (Mech RM)_PE-3 | 1d | 2012-08-12 | 2012-08-13 | PP3EM08102C0, PP3DP21113C20 SS | 123.2d | 0d | METAL DOORS [26 h]; METAL DOORS [2.61 no]; Cost | 317 | 1466 | C04ME08105C0 | PP3EM08103C0 | PA | C | P3 | M1 | DO | 081 | 03 | PE | S | BILL 2 | B02 | S2 | DR | R00 | ACF06 | PE-3 | 081 |  |  |  |  |  | 08 |
| PP3EM09601C0 |  | PA-P3 ; Floor Finishes (Mech RM)_PE-3 | 2d | 2012-08-12 | 2012-08-14 | PAFOA09201C1, PP3EM22001C0, PP3EM22003C0, PP3EM04001C0 SS+42d, PP3EM23004C0 FS+12d, PP3DP21113C20 SS | 107.2d | 0d | ASSORTED FLOOR FINISH [1344 h]; ASSORTED FLOOR FINISH [746 m2]; Cost | 326 | 1501 | C04ME09601C0 | PP3EM09601C0 | PA | C | P3 | M1 | FF | 096 | 01 | PE | S | BILL 2 | B02 | S2 | 01 | R00 | ACF06 | PE-3 | FF |  |  |  |  |  |  |
| PP3EM21107C0 |  | PA-P3 ; Final Fix, Inst of Sprinklers head (Mech RM)_PE-3 | 18d | 2012-08-12 | 2012-09-04 | PP3EM21104C0, PP3EM26006C0 FF, PP3DP21113C20 SS | 109.2d | 97.12d | MECHANICAL [78 h]; Cost |  |  | C04ME21121C0 | PP3EM21107C0 | PA | C | P3 | M1 | ME | 211 | 07 | PE | S | BILL 2 | B02 | S2 | FF | R00 | ACF07 | PE-3 | 211 | FF | MEP |  |  |  |  |
| PP3EM23010C0 |  | PA-P3 ; Final Fix, Inst of Grilles & Diffusers (Mech RM)_PE-3 | 18d | 2012-08-12 | 2012-09-04 | PP3EM23009C0, PP3DP21113C20 SS | 109.2d | 97.12d | MECHANICAL [42 h]; Cost |  |  | C04ME23021C0 | PP3EM23010C0 | PA | C | P3 | M1 | ME | 230 | 10 | PE | S | BILL 2 | B02 | S2 | FF | R00 | ACF07 | PE-3 | 230 | FF | MEP |  |  |  |  |
| PP3EM26006C0 |  | PA-P3 ; Final Fix, Inst of Ceiling rose (Mech RM)_PE-3 | 18d | 2012-08-12 | 2012-09-04 | PAFOA09201C1, PP3EM22001C0, PP3EM22003C0, PP3EM23004C0 FS+12d, PP3DP21113C20 SS | 91.2d | 0d | ELECTRICAL [0.7 h]; Cost |  |  | C04ME26015C0 | PP3EM26006C0 | PA | C | P3 | M1 | ME | 260 | 06 | PE | S | BILL 2 | B02 | S2 | FF | R00 | ACF07 | PE-3 | 260 | FF | MEP |  |  |  |  |
| PP3EM26009C0 |  | PA-P3 ; Final Fix, Termination & Gladding of Cables (Mech RM)_PE-3 | 18d | 2012-08-12 | 2012-09-04 | PP3EM26005C0, PAFOA09201C1, PP3EM22001C0, PP3EM22003C0, PP3EM23004C0 FS+12d, PP3DP21113C20 SS | 109.2d | 97.12d | ELECTRICAL [28.8 h]; Cost |  |  | C04ME26013C0 | PP3EM26009C0 | PA | C | P3 | M1 | ME | 260 | 09 | PE | S | BILL 2 | B02 | S2 | FF | R00 | ACF07 | PE-3 | 260 | FF | MEP |  |  |  |  |
| PP3EM27004C0 |  | PA-P3 ; Final Fix, BMS connection work to Equipment (Mech RM)_PE-3 | 18d | 2012-08-12 | 2012-09-04 | PP3EM21105C0, PP3EM23004C0, PP3EM23005C0, PP3EM23007C0, PP3EM26004C0, PP3EM27002C0, PP3EM27003C0, PP3DP21113C20 SS | 109.2d | 97.12d | ELECTRICAL [138 h]; Cost |  |  | C04ME27003C0 | PP3EM27004C0 | PA | C | P3 | M1 | ME | 270 | 04 | PE | S | BILL 2 | B02 | S2 | FF | R00 | ACF07 | PE-3 | 270 | FF | MEP |  |  |  |  |
| PP3EM27005C0 |  | PA-P3 ; Final Fix, Inst of ELV device (Detector/Speaker) (Mech RM)_PE-3 | 18d | 2012-08-12 | 2012-09-04 | PP3EM09902C0, PP3EM23006C0, PP3EM27003C0, PP3DP21113C20 SS | 109.2d | 97.12d | ELECTRICAL [8.4 h]; Cost |  |  | C04ME27030C0 | PP3EM27005C0 | PA | C | P3 | M1 | ME | 270 | 05 | PE | S | BILL 2 | B02 | S2 | FF | R00 | ACF07 | PE-3 | 270 | FF | MEP |  |  |  |  |
| PP3EM08101C0 |  | PA-P3 ; Al / Glass doors (Mech RM)_PE-3 | 0.88d | 2012-08-13 | 2012-08-14 | PP3EM08103C0, PP3DP21113C20 SS | 123.2d | 0d | ASSORTED DOORS [43 h]; ASSORTED DOORS [4.33 no]; Cost |  |  | C04ME08109C0 | PP3EM08101C0 | PA | C | P3 | M1 | DO | 081 | 01 | PE | S | BILL 2 | B02 | S2 | 03 | R00 | ACF06 | PE-3 | 081 |  |  |  |  |  |  |
| PP3EM08701C0 |  | PA-P3 ; Ironmongery (Mech RM)_PE-3 | 2.12d | 2012-08-14 | 2012-08-16 | PP3EM08101C0, PP3EM08103C0, PP3DP21113C20 SS | 123.2d | 111.12d | IRONMONGERY [27 h]; IRONMONGERY [2.72 no]; Cost | 322 | 1467 | C04ME08709C0 | PP3EM08701C0 | PA | C | P3 | M1 | DO | 087 | 01 | PE | S | BILL 2 | B02 | S2 | IM | R00 | ACF06 | PE-3 | 087 |  |  |  |  |  | 08 |
| PP3EM22004C0 |  | PA-P3 ; Final Fix, Inst of All drain (Mech RM)_PE-3 | 18d | 2012-08-14 | 2012-09-06 | PP3EM09601C0, PP3DP21113C20 SS | 107.2d | 95.12d | PLUMBING [120 h]; Cost |  |  | C04ME22003C0 | PP3EM22004C0 | PA | C | P3 | M1 | ME | 220 | 04 | PE | S | BILL 2 | B02 | S2 | FF | R00 | ACF07 | PE-3 | 220 | FF | MEP |  |  |  |  |
| PP3EM09901C0 |  | PA-P3 ; Wall - final Paint (Mech RM)_PE-3 | 2d | 2012-09-04 | 2012-09-06 | PP3EM09902C0, PP3EM26006C0, PP3DP21113C20 SS | 107.2d | 95.12d | WALL PAINT [169 h]; WALL PAINT [209.89 m2]; Cost | 329 | 1470 | C04ME09903C0 | PP3EM09901C0 | PA | C | P3 | M1 | PA | 099 | 01 | PE | S | BILL 2 | B02 | S2 | 02 | R00 | ACF06 | PE-3 | 099 |  |  |  |  |  |  |
| PP3EM26007C0 |  | PA-P3 ; Final Fix, Inst of Light fittings (Mech RM)_PE-3 | 18d | 2012-09-04 | 2012-09-25 | PP3EM09902C0, PP3EM26006C0, PP3DP21113C20 SS | 91.2d | 79.12d | ELECTRICAL [174 h]; Cost |  |  | C04ME26019C0 | PP3EM26007C0 | PA | C | P3 | M1 | ME | 260 | 07 | PE | S | BILL 2 | B02 | S2 | FF | R00 | ACF07 | PE-3 | 260 | FF | MEP |  |  |  |  |
| PP3EM26008C0 |  | PA-P3 ; Final Fix, Inst of Switch/Sockets (Mech RM)_PE-3 | 18d | 2012-09-04 | 2012-09-25 | PP3EM09902C0, PP3EM26006C0, PP3DP21113C20 SS | 91.2d | 79.12d | ELECTRICAL [7.2 h]; Cost |  |  | C04ME26017C0 | PP3EM26008C0 | PA | C | P3 | M1 | ME | 260 | 08 | PE | S | BILL 2 | B02 | S2 | FF | R00 | ACF07 | PE-3 | 260 | FF | MEP |  |  |  |  |

| ID | WBS | Activity | Duration | Start | Finish | Predecessors | Total float | Free float | Resources | Change Order # | NEW ACTIVITY ID | change id | IDDD | CCAD BUILDING(SET) | CCAD PHASE(SET) | CCAD FLOOR(SET) | CCAD ZONE(SET) | CCAD WORK(SET) | CCAD SECTION(SET) | CCAD SERIAL No.(SET) | CCAD Carpark code(SET) | CCAD Carpark district code(set) | CCAD CBS(SET) | CCAD BILL(SET) | CCAD HANDOVER(SET) | CCAD TAG(SET) | CCAD REV(SET) | CCADACF (SET) | FSP CODE | CCAD SSCF | CCAD SUB ZONE MEP(SET) | CCAD CSA | Act Selector % |
| --- | --- | --- | --- | --- | --- | --- | --- | --- | --- | --- | --- | --- | --- | --- | --- | --- | --- | --- | --- | --- | --- | --- | --- | --- | --- | --- | --- | --- | --- | --- | --- | --- | --- |
|  | P2 | **P2 LEVEL - MEP & Finishes** |  | 2011-06-14 | 2013-02-28 |  |  |  |  |  |  |  |  |  |  |  |  |  |  |  |  |  |  |  |  |  |  |  |  |  |  |  |  |
|  | AP1 | **PARKING AREA : Zone PA-1** |  | 2011-10-03 | 2012-12-10 |  |  |  |  |  |  |  |  |  |  |  |  |  |  |  |  |  |  |  |  |  |  |  |  |  |  |  |  |
| PP2AP09901C10 |  | PA-P2 ; Prime & 1st coat (Wall & Ceiling) (Parking Area)_PA-1 | 18d | 2011-10-03 | 2011-10-24 | PP1S903371C0, PP1S903372C0 SS, PP1SX03371C0 SS, PP3AP09901C10 SS | 107.9d | 42d | CEILING PAINT [2593 h]; WALL PAINT [561 h]; CEILING PAINT [3235.5 m2]; WALL PAINT [699 m2]; Cost | 328 | 956 | CP3PA09901C0 | PP2AP09901C0 | PA | C | P2 | PK | PA | 099 | 01 | PA | N | BILL 2 | B02 | S1 | 01 | R00 | ACF06 | PA-1 | 099 |  |  |  |
| PP2AP21114C10 |  | PA-P2 ; 1st Fix, Fire Fighting system (Parking Area)_PA-1 | 42d | 2011-12-18 | 2012-02-07 | PP2AP09901C10, PP3AP21114C10 | 65.9d | 0d | MECHANICAL [402 h]; Cost |  |  | CP3PA21109C0 | PP2AP21114C0 | PA | C | P2 | PK | ME | 211 | 14 | PA | N | BILL 2 | B02 | S1 | 1F | R00 | ACF04 | PA-1 | 211 | 1S | MEP | M1F |
| PP2AP21124C10 |  | PA-P2 ; 2nd Fix, Fire Fighting system (Parking Area)_PA-1 | 42d | 2012-02-07 | 2012-03-27 | PP2AP21114C10 | 193.9d | 145.25d | MECHANICAL [565.2 h]; Cost |  |  | CP3PA21115C0 | PP2AP21124C0 | PA | C | P2 | PK | ME | 211 | 24 | PA | N | BILL 2 | B02 | S1 | 2F | R00 | ACF07 | PA-1 | 211 | 2n | MEP |  |
| PP2AP22015C10 |  | PA-P2 ; 1st Fix, Plumbing / Drainage System (Parking Area)_PA-1 | 42d | 2012-02-07 | 2012-03-27 | PP2AP21114C10 SS, PP2AP09901C10, PP2AP21114C10 | 65.9d | 0d | PLUMBING [1078.8 h]; Cost |  |  | CP3PA22001C0 | PP2AP22015C0 | PA | C | P2 | PK | ME | 220 | 15 | PA | N | BILL 2 | B02 | S1 | 1F | R00 | ACF04 | PA-1 | 220 | 1S | MEP | M1F |
| PP2AP22025C10 |  | PA-P2 ; 2nd Fix, Plumbing / Drainage System (Parking Area)_PA-1 | 42d | 2012-03-27 | 2012-05-15 | PP2AP22015C10 | 164.9d | 109.25d | PLUMBING [1332 h]; Cost |  |  | CP3PA22011C0 | PP2AP22025C0 | PA | C | P2 | PK | ME | 220 | 25 | PA | N | BILL 2 | B02 | S1 | 2F | R00 | ACF07 | PA-1 | 220 | 2n | MEP |  |
| PP2AP23011C10 |  | PA-P2 ; 1st Fix, CHW / HVAC System (Parking Area)_PA-1 | 42d | 2012-03-27 | 2012-05-15 | PP2AP22015C10 SS, PP2AP09901C10, PP2AP22015C10 | 65.9d | 0d | MECHANICAL [2788.8 h]; Cost |  |  | CP3PA23001C0 | PP2AP23011C0 | PA | C | P2 | PK | ME | 230 | 11 | PA | N | BILL 2 | B02 | S1 | 1F | R00 | ACF04 | PA-1 | 230 | 1S | MEP | M1F |
| PP2AP23021C10 |  | PA-P2 ; 2nd Fix, CHW / HVAC System (Parking Area)_PA-1 | 42d | 2012-05-15 | 2012-07-04 | PP2AP23011C10 | 131.9d | 76.25d | MECHANICAL [2788.8 h]; Cost |  |  | CP3PA23011C0 | PP2AP23021C0 | PA | C | P2 | PK | ME | 230 | 21 | PA | N | BILL 2 | B02 | S1 | 2F | R00 | ACF07 | PA-1 | 230 | 2n | MEP |  |
| PP2AP26012C10 |  | PA-P2 ; 1st Fix, Electrical System (Parking Area)_PA-1 | 42d | 2012-05-15 | 2012-07-04 | PP2AP21114C10 SS, PP2AP09901C10, PP2AP23011C10 | 65.9d | 0d | ELECTRICAL [2594.4 h]; Cost |  |  | CP3PA26001C0 | PP2AP26012C0 | PA | C | P2 | PK | ME | 260 | 12 | PA | N | BILL 2 | B02 | S1 | 1F | R00 | ACF04 | PA-1 | 260 | 1S | MEP | M1F |
| PP2AP26022C10 |  | PA-P2 ; 2nd Fix, Electrical System (Parking Area)_PA-1 | 42d | 2012-07-04 | 2012-08-25 | PP2AP26012C10 | 98.9d | 43.25d | ELECTRICAL [2594.4 h]; Cost |  |  | CP3PA26005C0 | PP2AP26022C0 | PA | C | P2 | PK | ME | 260 | 22 | PA | N | BILL 2 | B02 | S1 | 2F | R00 | ACF07 | PA-1 | 260 | 2n | MEP |  |
| PP2AP27013C10 |  | PA-P2 ; 1st Fix, ELV system (Parking Area)_PA-1 | 42d | 2012-07-04 | 2012-08-25 | PP2AP09901C10, PP2AP26012C10 | 65.9d | 0d | ELECTRICAL [422.4 h]; Cost |  |  | CP3PA27010C0 | PP2AP27013C0 | PA | C | P2 | PK | ME | 270 | 13 | PA | N | BILL 2 | B02 | S1 | 1F | R00 | ACF04 | PA-1 | 270 | 1S | MEP | M1F |
| PP2AP27023C10 |  | PA-P2 ; 2nd Fix, ELV system (Parking Area)_PA-1 | 42d | 2012-08-25 | 2012-10-13 | PP2AP27013C10 | 65.9d | 10.25d | ELECTRICAL [422.4 h]; Cost |  |  | CP3PA27020C0 | PP2AP27023C0 | PA | C | P2 | PK | ME | 270 | 23 | PA | N | BILL 2 | B02 | S1 | 2F | R00 | ACF07 | PA-1 | 270 | 2n | MEP |  |
| PP2AP09902C10 |  | PA-P2 ; 2nd coat (Wall & Ceiling) (Parking Area)_PA-1 | 6d | 2012-09-09 | 2012-09-16 | PP2AP09901C10, PP1S103331C460, PP1S103331C470, PP1S103331C450, PP1S903371C10, PP1SX03371C10, PP1SX03373C10 | 48.65d | 0d | CEILING PAINT [1396 h]; WALL PAINT [303 h]; CEILING PAINT [1742 m2]; WALL PAINT [376.5 m2]; Cost | 329 | 957 | CP3PA09903C0 | PP2AP09902C0 | PA | C | P2 | PK | PA | 099 | 02 | PA | N | BILL 2 | B02 | S1 | 02 | R00 | ACF06 | PA-1 | 099 |  |  |  |
| PP2AP21113C10 |  | PA-P2 ; Final Fix, Fire Fighting system (Parking Area)_PA-1 | 6d | 2012-09-16 | 2012-09-23 | PP2AP09902C10, PP2AP21124C10, PP1S103331C460, PP1S103331C470, PP1S103331C450, PP1S903371C10, PP1SX03371C10, PP1SX03373C10 | 48.65d | 0d | MECHANICAL [402 h]; Cost |  |  | CP3PA21113C0 | PP2AP21113C0 | PA | C | P2 | PK | ME | 211 | 13 | PA | N | BILL 2 | B02 | S1 | FF | R00 | ACF07 | PA-1 | 211 | FF | MEP |  |
| PP2AP22011C10 |  | PA-P2 ; Final Fix, Drainage System (Parking Area)_PA-1 | 9d | 2012-09-23 | 2012-10-03 | PP2AP09902C10, PP2AP22025C10, PP1S103331C460, PP1S103331C470, PP1S103331C450, PP1S903371C10, PP1SX03371C10, PP1SX03373C10, PP2AP21113C10 SS, PP2AP21113C10 | 55.65d | 0d | PLUMBING [1078.8 h]; Cost |  |  | CP3PA22011C0 | PP2AP22011C0 | PA | C | P2 | PK | ME | 220 | 11 | PA | N | BILL 2 | B02 | S1 | FF | R00 | ACF07 | PA-1 | 220 | FF | MEP |  |
| PP2AP23019C10 |  | PA-P2 ; Final Fix, CHW / HVAC System (Parking Area)_PA-1 | 9d | 2012-10-03 | 2012-10-14 | PP2AP09902C10, PP2AP23021C10, PP1S103331C460, PP1S103331C470, PP1S103331C450, PP1S903371C10, PP1SX03371C10, PP1SX03373C10, PP2AP21113C10 SS, PP2AP22011C10 | 55.65d | 0d | MECHANICAL [2788.8 h]; Cost |  |  | CP3PA23019C0 | PP2AP23019C0 | PA | C | P2 | PK | ME | 230 | 19 | PA | N | BILL 2 | B02 | S1 | FF | R00 | ACF07 | PA-1 | 230 | FF | MEP |  |
| PP2AP26017C10 |  | PA-P2 ; Final Fix, Electrical System (Parking Area)_PA-1 | 9d | 2012-10-14 | 2012-10-24 | PP2AP09902C10, PP2AP26022C10, PP1S103331C460, PP1S103331C470, PP1S103331C450, PP1S903371C10, PP1SX03371C10, PP1SX03373C10, PP2AP21113C10 SS, PP2AP23019C10 | 55.65d | 0d | ELECTRICAL [2594.4 h]; Cost |  |  | CP3PA26017C0 | PP2AP26017C0 | PA | C | P2 | PK | ME | 260 | 17 | PA | N | BILL 2 | B02 | S1 | FF | R00 | ACF07 | PA-1 | 260 | FF | MEP |  |
| PP2AP27030C10 |  | PA-P2 ; Final Fix, ELV system (Parking Area)_PA-1 | 9d | 2012-10-24 | 2012-11-06 | PP2AP09902C10, PP2AP27023C10, PP2AP27023C10 FF, PP1S103331C460, PP1S103331C470, PP1S103331C450, PP1S903371C10, PP1SX03371C10, PP1SX03373C10, PP2AP21113C10 SS, PP2AP26017C10 | 55.65d | 0d | ELECTRICAL [422.4 h]; Cost |  |  | CP3PA27030C0 | PP2AP27030C0 | PA | C | P2 | PK | ME | 270 | 30 | PA | N | BILL 2 | B02 | S1 | FF | R00 | ACF07 | PA-1 | 270 | FF | MEP |  |
| PP2AP09903C10 |  | PA-P2 ; Concrete Sealer (Floor) (Parking Area)_PA-1 | 9d | 2012-11-06 | 2012-11-18 | PP2AP21113C10 SS, PP2AP22011C10, PP2AP23019C10, PP2AP26017C10, PP2AP27030C10, PP1S103331C460, PP1S103331C470, PP1S103331C450, PP1S903371C10, PP1SX03371C10, PP1SX03373C10 | 55.65d | 0d | ASSORTED FLOOR FINISH [4360 h]; ASSORTED FLOOR FINISH [2418.5 m2]; Cost |  |  | AP2PK09903C0 | PP2AP09903C0 | PA | C | P2 | PK | FF | 096 | 03 | PA | N | BILL 2 | B02 | S1 | 05 | R00 | ACF06 | PA-1 | CS |  |  |  |
| PP2AP05509C10 |  | PA-P3 ; Grill & Louvers (Parking Area)_PA-1 | 9d | 2012-11-18 | 2012-11-28 | PP2AP09903C10, PP1S103331C460, PP1S103331C470, PP1S103331C450, PP1S903371C10, PP1SX03371C10, PP1SX03373C10, PP2AP21113C10 SS | 64.65d | 38.34d | SECONDARY STEEL [335 h]; Cost | 328 | 956 | CP3PA09901C0 | PP3AP09901C0 | PA | C | P2 | PK | SW | 055 | 01 | PA | N | BILL 2 | B02 | S1 | 02 | R00 | ACF03 | PA-1 | 056 |  |  |  |
| PP2AP11006C10 |  | PA-P2 ; Wall Protection (WP, CG, WG, FCG) (Parking Area)_PA-1 | 9d | 2012-11-18 | 2012-11-28 | PP2AP09903C10, PP1S103331C460, PP1S103331C470, PP1S103331C450, PP1S903371C10, PP1SX03371C10, PP1SX03373C10, PP2AP21113C10 SS | 55.65d | 0d | FF&E [84 h]; Cost | 326 | 1001 | CP3PA11001C0 | PP2AP11006C0 | PA | C | P2 | PK | WF | 097 | 06 | PA | N | BILL 2 | B02 | S1 | 03 | R00 | ACF08 | PA-1 | 097 |  |  |  |
| PP2AP11004C10 |  | PA-P2 ; Floor Marking & Signage (Parking Area)_PA-1 | 9d | 2012-11-28 | 2012-12-10 | PP2AP09903C10, PP2AP11006C10, PP1S103331C460, PP1S103331C470, PP1S103331C450, PP1S903371C10, PP1SX03371C10, PP1SX03373C10, PP2AP21113C10 SS | 55.65d | 29.34d | SIGNAGES [1007 h]; SIGNAGES [140 no]; Cost |  |  | AP2PK11004C0 | PP2AP11004C0 | PA | C | P2 | PK | SA | 110 | 04 | PA | N | BILL 2 | B02 | S1 | 09 | R00 | ACF08 | PA-1 | c |  |  |  |
|  | AP2 | **PARKING AREA : Zone PA-2** |  | 2012-01-09 | 2012-12-19 |  |  |  |  |  |  |  |  |  |  |  |  |  |  |  |  |  |  |  |  |  |  |  |  |  |  |  |  |
| PP2AP09901C20 |  | PA-P2 ; Prime & 1st coat (Wall & Ceiling) (Parking Area)_PA-2 | 18d | 2012-01-09 | 2012-01-30 | PP1SX03372C0 SS, PP1SX03373C0 SS, PP3AP09901C20 | 65.31d | 18d | CEILING PAINT [2593 h]; WALL PAINT [561 h]; CEILING PAINT [3235.5 m2]; WALL PAINT [699 m2]; Cost | 328 | 956 | CP3PA09901C0 | PP2AP09901C0 | PA | C | P2 | PK | PA | 099 | 01 | PA | N | BILL 2 | B02 | S1 | 01 | R00 | ACF06 | PA-2 | 099 |  |  |  |
| PP2AP21114C20 |  | PA-P2 ; 1st Fix, Fire Fighting system (Parking Area)_PA-2 | 36d | 2012-02-21 | 2012-04-03 | PP2AP09901C20, PP3AP21114C20 | 47.31d | 0d | MECHANICAL [402 h]; Cost |  |  | CP3PA21109C0 | PP2AP21114C0 | PA | C | P2 | PK | ME | 211 | 14 | PA | N | BILL 2 | B02 | S1 | 1F | R00 | ACF04 | PA-2 | 211 | 1S | MEP | M1F |
| PP2AP21124C20 |  | PA-P2 ; 2nd Fix, Fire Fighting system (Parking Area)_PA-2 | 36d | 2012-04-03 | 2012-05-15 | PP2AP21114C20 | 155.31d | 105.66d | MECHANICAL [565.2 h]; Cost |  |  | CP3PA21115C0 | PP2AP21124C0 | PA | C | P2 | PK | ME | 211 | 24 | PA | N | BILL 2 | B02 | S1 | 2F | R00 | ACF07 | PA-2 | 211 | 2n | MEP |  |
| PP2AP22015C20 |  | PA-P2 ; 1st Fix, Plumbing / Drainage System (Parking Area)_PA-2 | 36d | 2012-04-03 | 2012-05-15 | PP2AP21114C20 SS, PP2AP09901C20, PP2AP21114C20 | 47.31d | 0d | PLUMBING [1078.8 h]; Cost |  |  | CP3PA22001C0 | PP2AP22015C0 | PA | C | P2 | PK | ME | 220 | 15 | PA | N | BILL 2 | B02 | S1 | 1F | R00 | ACF04 | PA-2 | 220 | 1S | MEP | M1F |
| PP2AP22025C20 |  | PA-P2 ; 2nd Fix, Plumbing / Drainage System (Parking Area)_PA-2 | 36d | 2012-05-15 | 2012-06-27 | PP2AP22015C20 | 128.31d | 78.66d | PLUMBING [1332 h]; Cost |  |  | CP3PA22011C0 | PP2AP22025C0 | PA | C | P2 | PK | ME | 220 | 25 | PA | N | BILL 2 | B02 | S1 | 2F | R00 | ACF07 | PA-2 | 220 | 2n | MEP |  |
| PP2AP23011C20 |  | PA-P2 ; 1st Fix, CHW / HVAC System (Parking Area)_PA-2 | 36d | 2012-05-15 | 2012-06-27 | PP2AP22015C20 SS, PP2AP09901C20, PP2AP22015C20 | 47.31d | 0d | MECHANICAL [2788.8 h]; Cost |  |  | CP3PA23001C0 | PP2AP23011C0 | PA | C | P2 | PK | ME | 230 | 11 | PA | N | BILL 2 | B02 | S1 | 1F | R00 | ACF04 | PA-2 | 230 | 1S | MEP | M1F |
| PP2AP23021C20 |  | PA-P2 ; 2nd Fix, CHW / HVAC System (Parking Area)_PA-2 | 36d | 2012-06-27 | 2012-08-08 | PP2AP23011C20 | 101.31d | 51.66d | MECHANICAL [2788.8 h]; Cost |  |  | CP3PA23011C0 | PP2AP23021C0 | PA | C | P2 | PK | ME | 230 | 21 | PA | N | BILL 2 | B02 | S1 | 2F | R00 | ACF07 | PA-2 | 230 | 2n | MEP |  |
| PP2AP26012C20 |  | PA-P2 ; 1st Fix, Electrical System (Parking Area)_PA-2 | 36d | 2012-06-27 | 2012-08-08 | PP2AP21114C20 SS, PP2AP09901C20, PP2AP23011C20 | 47.31d | 0d | ELECTRICAL [2594.4 h]; Cost |  |  | CP3PA26001C0 | PP2AP26012C0 | PA | C | P2 | PK | ME | 260 | 12 | PA | N | BILL 2 | B02 | S1 | 1F | R00 | ACF04 | PA-2 | 260 | 1S | MEP | M1F |
| PP2AP26022C20 |  | PA-P2 ; 2nd Fix, Electrical System (Parking Area)_PA-2 | 36d | 2012-08-08 | 2012-09-22 | PP2AP26012C20 | 74.31d | 24.66d | ELECTRICAL [2594.4 h]; Cost |  |  | CP3PA26005C0 | PP2AP26022C0 | PA | C | P2 | PK | ME | 260 | 22 | PA | N | BILL 2 | B02 | S1 | 2F | R00 | ACF07 | PA-2 | 260 | 2n | MEP |  |
| PP2AP27013C20 |  | PA-P2 ; 1st Fix, ELV system (Parking Area)_PA-2 | 36d | 2012-08-08 | 2012-09-22 | PP2AP09901C20, PP2AP26012C20 | 47.31d | 0d | ELECTRICAL [422.4 h]; Cost |  |  | CP3PA27010C0 | PP2AP27013C0 | PA | C | P2 | PK | ME | 270 | 13 | PA | N | BILL 2 | B02 | S1 | 1F | R00 | ACF04 | PA-2 | 270 | 1S | MEP | M1F |
| PP2AP09902C20 |  | PA-P2 ; 2nd coat (Wall & Ceiling) (Parking Area)_PA-2 | 9d | 2012-09-09 | 2012-09-19 | PP2AP09901C20, PP1S103331C460, PP1S103331C470, PP1S103331C450, PP1S903371C10, PP1SX03371C10, PP1SX03373C10 | 49.65d | 0d | CEILING PAINT [1396 h]; WALL PAINT [303 h]; CEILING PAINT [1742 m2]; WALL PAINT [376.5 m2]; Cost | 329 | 957 | CP3PA09903C0 | PP2AP09902C0 | PA | C | P2 | PK | PA | 099 | 02 | PA | N | BILL 2 | B02 | S1 | 02 | R00 | ACF06 | PA-2 | 099 |  |  |  |
| PP2AP21113C20 |  | PA-P2 ; Final Fix, Fire Fighting system (Parking Area)_PA-2 | 9d | 2012-09-19 | 2012-09-30 | PP2AP09902C20, PP2AP21124C20, PP1S103331C460, PP1S103331C470, PP1S103331C450, PP1S903371C10, PP1SX03371C10, PP1SX03373C10, PP2AP21113C10 SS | 49.65d | 0d | MECHANICAL [402 h]; Cost |  |  | CP3PA21113C0 | PP2AP21113C0 | PA | C | P2 | PK | ME | 211 | 13 | PA | N | BILL 2 | B02 | S1 | FF | R00 | ACF07 | PA-2 | 211 | FF | MEP |  |
| PP2AP27023C20 |  | PA-P2 ; 2nd Fix, ELV system (Parking Area)_PA-2 | 36d | 2012-09-22 | 2012-11-05 | PP2AP27013C20 | 47.31d | 0d | ELECTRICAL [422.4 h]; Cost |  |  | CP3PA27020C0 | PP2AP27023C0 | PA | C | P2 | PK | ME | 270 | 23 | PA | N | BILL 2 | B02 | S1 | 2F | R00 | ACF07 | PA-2 | 270 | 2n | MEP |  |
| PP2AP22011C20 |  | PA-P2 ; Final Fix, Drainage System (Parking Area)_PA-2 | 9d | 2012-09-30 | 2012-10-10 | PP2AP09902C20, PP2AP22025C20, PP1S103331C460, PP1S103331C470, PP1S103331C450, PP1S903371C10, PP1SX03371C10, PP1SX03373C10, PP2AP21113C10 SS, PP2AP21113C20 | 49.65d | 0d | PLUMBING [1078.8 h]; Cost |  |  | CP3PA22011C0 | PP2AP22011C0 | PA | C | P2 | PK | ME | 220 | 11 | PA | N | BILL 2 | B02 | S1 | FF | R00 | ACF07 | PA-2 | 220 | FF | MEP |  |
| PP2AP23019C20 |  | PA-P2 ; Final Fix, CHW / HVAC System (Parking Area)_PA-2 | 9d | 2012-10-10 | 2012-10-21 | PP2AP09902C20, PP2AP23021C20, PP1S103331C460, PP1S103331C470, PP1S103331C450, PP1S903371C10, PP1SX03371C10, PP1SX03373C10, PP2AP21113C10 SS, PP2AP22011C20 | 49.65d | 0d | MECHANICAL [2788.8 h]; Cost |  |  | CP3PA23019C0 | PP2AP23019C0 | PA | C | P2 | PK | ME | 230 | 19 | PA | N | BILL 2 | B02 | S1 | FF | R00 | ACF07 | PA-2 | 230 | FF | MEP |  |
| PP2AP26017C20 |  | PA-P2 ; Final Fix, Electrical System (Parking Area)_PA-2 | 9d | 2012-10-21 | 2012-11-03 | PP2AP09902C20, PP2AP26022C20, PP1S103331C460, PP1S103331C470, PP1S103331C450, PP1S903371C10, PP1SX03371C10, PP1SX03373C10, PP2AP21113C10 SS, PP2AP23019C20, PV09GZ27058R2 FF | 49.65d | 2.34d | ELECTRICAL [2594.4 h]; Cost |  |  | CP3PA26017C0 | PP2AP26017C0 | PA | C | P2 | PK | ME | 260 | 17 | PA | N | BILL 2 | B02 | S1 | FF | R00 | ACF07 | PA-2 | 260 | FF | MEP |  |
| PP2AP27030C20 |  | PA-P2 ; Final Fix, ELV system (Parking Area)_PA-2 | 9d | 2012-11-05 | 2012-11-17 | PP2AP09902C20, PP2AP27023C20, PP2AP27023C20 FF, PP1S103331C460, PP1S103331C470, PP1S103331C450, PP1S903371C10, PP1SX03371C10, PP1SX03373C10, PP2AP21113C10 SS, PP2AP26017C20 | 47.31d | 0d | ELECTRICAL [422.4 h]; Cost |  |  | CP3PA27030C0 | PP2AP27030C0 | PA | C | P2 | PK | ME | 270 | 30 | PA | N | BILL 2 | B02 | S1 | FF | R00 | ACF07 | PA-2 | 270 | FF | MEP |  |
| PP2AP09903C20 |  | PA-P2 ; Concrete Sealer (Floor) (Parking Area)_PA-2 | 9d | 2012-11-17 | 2012-11-27 | PP2AP21113C20, PP2AP22011C20, PP2AP23019C20, PP2AP26017C20, PP2AP27030C20, PP1S103331C460, PP1S103331C470, PP1S103331C450, PP1S903371C10, PP1SX03371C10, PP1SX03373C10, PP2AP21113C10 SS, PV10P203307R2 FF | 47.31d | 0d | ASSORTED FLOOR FINISH [4360 h]; ASSORTED FLOOR FINISH [2418.5 m2]; Cost |  |  | AP2PK09903C0 | PP2AP09903C0 | PA | C | P2 | PK | FF | 096 | 03 | PA | N | BILL 2 | B02 | S1 | 05 | R00 | ACF06 | PA-2 | CS |  |  |  |
| PP2AP05509C20 |  | PA-P3 ; Grill & Louvers (Parking Area)_PA-2 | 9d | 2012-11-27 | 2012-12-09 | PP2AP09903C20, PP1S103331C460, PP1S103331C470, PP1S103331C450, PP1S903371C10, PP1SX03371C10, PP1SX03373C10, PP2AP21113C10 SS | 56.31d | 30d | SECONDARY STEEL [335 h]; Cost | 328 | 956 | CP3PA09901C0 | PP3AP09901C0 | PA | C | P2 | PK | SW | 055 | 01 | PA | N | BILL 2 | B02 | S1 | 02 | R00 | ACF03 | PA-2 | 056 |  |  |  |
| PP2AP11006C20 |  | PA-P2 ; Wall Protection (WP, CG, WG, FCG) (Parking Area)_PA-2 | 9d | 2012-11-27 | 2012-12-09 | PP2AP09903C20, PP1S103331C460, PP1S103331C470, PP1S103331C450, PP1S903371C10, PP1SX03371C10, PP1SX03373C10, PP2AP21113C10 SS | 47.31d | 0d | FF&E [84 h]; Cost | 326 | 1001 | CP3PA11001C0 | PP2AP11006C0 | PA | C | P2 | PK | WF | 097 | 06 | PA | N | BILL 2 | B02 | S1 | 03 | R00 | ACF08 | PA-2 | 097 |  |  |  |
| PP2AP11004C20 |  | PA-P2 ; Floor Marking & Signage (Parking Area)_PA-2 | 9d | 2012-12-09 | 2012-12-19 | PP2AP09903C20, PP2AP11006C20, PP1S103331C460, PP1S103331C470, PP1S103331C450, PP1S903371C10, PP1SX03371C10, PP1SX03373C10, PP2AP21113C10 SS | 47.31d | 21d | SIGNAGES [1007 h]; SIGNAGES [140 no]; Cost |  |  | AP2PK11004C0 | PP2AP11004C0 | PA | C | P2 | PK | SA | 110 | 04 | PA | N | BILL 2 | B02 | S1 | 09 | R00 | ACF08 | PA-2 | c |  |  |  |

| ID | WBS | Activity | Duration | Start | Finish | Predecessors | Total float | Free float | Resources | NEW ACTIVITY ID | change id | IDDD | CCAD BUILDING(SET) | CCAD PHASE(SET) | CCAD FLOOR(SET) | CCAD ZONE(SET) | CCAD WORK(SET) | CCAD SECTION(SET) | CCAD SERIAL No.(SET) | CCAD Carpark code(SET) | CCAD Carpark district code(set) | CCAD CBS(SET) | CCAD BILL(SET) | CCAD HANDOVER(SET) | CCAD TAG(SET) | CCAD REV(SET) | CCADACF (SET) | FSP CODE | CCAD SSCF | Change Order # | CCAD CSA | Act Selector % | CCAD SUB ZONE MEP(SET) | CCAD DIVISION(SET) | CCAD MEQ |
| --- | --- | --- | --- | --- | --- | --- | --- | --- | --- | --- | --- | --- | --- | --- | --- | --- | --- | --- | --- | --- | --- | --- | --- | --- | --- | --- | --- | --- | --- | --- | --- | --- | --- | --- | --- |
|  | AE2 | **ELECTRICAL ROOMS (2 NOS.) : Zone PA-2** |  | 2012-02-02 | 2012-12-25 |  |  |  |  |  |  |  |  |  |  |  |  |  |  |  |  |  |  |  |  |  |  |  |  |  |  |  |  |  |  |
| PP2AE09903C0 |  | PA-P2 ; Ceiling Prime & 1st coat (Elec RM)_PA-2 | 18d | 2012-02-02 | 2012-02-25 | PP1SX03372C0, PP1SX03373C0, PP3AE09903C0 | 42.31d | 0d | ASSORTED CEILING FINISH [17 h]; Cost | 1544 | CP2ME09905C0 | PP2AE09903C0 | PA | C | P2 | ER | PA | 099 | 03 | PA | N | BILL 2 | B02 | S1 | 01 | R00 | ACF06 | PA-2 | 099 |  |  |  |  |  |  |
| PP2AE04001C0 |  | PA-P2 ; Block Wall Works (Elec RM)_PA-2 | 30d | 2012-02-25 | 2012-03-31 | PP2AE09903C0 | 42.31d | 0d | BLOCKWORKS [602 h]; BLOCKWORKS [172 m2]; Cost |  | AP2ER04001C0 | PP2AE04001C0 | PA | C | P2 | ER | BL | 040 | 01 | PA | N | BILL 2 | B02 | S1 | BL | R00 | ACF06 | PA-2 | 040 |  |  |  |  |  |  |
| PP2AE09201C0 |  | PA-P2 ; Metal Studs (Elec RM)_PA-2 | 10d | 2012-03-31 | 2012-04-11 | PP2AE04001C0 | 160.31d | 0d | PARTITIONS [29 h]; PARTITIONS [4 m]; Cost | 1372 | CP2ME09201C0 | PP2AE09201C0 | PA | C | P2 | ER | PT | 092 | 01 | PA | N | BILL 2 | B02 | S1 | 1F | R00 | ACF06 | PA-2 | 092 | 313 | GP | PMS |  |  |  |
| PP2AE23001C0 |  | PA-P2 ; 1st Fix, Inst. of Supports for MEP (Elec RM)_PA-2 | 12d | 2012-03-31 | 2012-04-14 | PP2AE04001C0 | 42.31d | 0d | MECHANICAL [625.2 h]; Cost |  | CP2ME23010C0 | PP2AE23001C0 | PA | C | P2 | ER | ME | 230 | 01 | PA | N | BILL 2 | B02 | S1 | 1F | R00 | ACF04 | PA-2 | 230 |  | MEP | M1F | 1S |  |  |
| PP2AE08102C0 |  | PA-P2 ; Metal Door Frames (Elec RM)_PA-2 | 12d | 2012-04-11 | 2012-04-25 | PP2AE09201C0, GNHE08101C0 | 198.31d | 119.66d | METAL DOORS [45 h]; Cost | 1374 | CP2ME08101C0 | PP2AE08102C0 | PA | C | P2 | ER | DO | 081 | 02 | PA | N | BILL 2 | B02 | S1 | DF | R00 | ACF06 | PA-2 | 081 | 316 |  |  |  | 08 |  |
| PP2AE09202C0 |  | PA-P2 ; Partitions 1st face (Elec RM)_PA-2 | 18d | 2012-04-14 | 2012-05-05 | PP2AE09201C0 SS+12d | 160.31d | 111.66d | PARTITIONS [4 m]; PARTITIONS [16 h]; Cost | 1373 | CP2ME09203C0 | PP2AE09202C0 | PA | C | P2 | ER | PT | 092 | 02 | PA | N | BILL 2 | B02 | S1 | 2F | R00 | ACF06 | PA-2 | 092 | 314 | GP | P1F |  |  |  |
| PP2AE23002C0 |  | PA-P2 ; 1st Fix, Inst of CHW pipe (Elec RM)_PA-2 | 42d | 2012-04-14 | 2012-06-02 | PP2AE23001C0, PP2AE04001C0 | 126.31d | 84d | MECHANICAL [3097.2 h]; Cost |  | CP2ME23012C0 | PP2AE23002C0 | PA | C | P2 | ER | ME | 230 | 02 | PA | N | BILL 2 | B02 | S1 | 1F | R00 | ACF04 | PA-2 | 230 |  | MEP | M1F | 1S |  |  |
| PP2AE23003C0 |  | PA-P2 ; 1st Fix, Inst of Ducting (Elec RM)_PA-2 | 42d | 2012-04-14 | 2012-06-02 | PP2AE23001C0, PP2AE04001C0 | 42.31d | 0d | MECHANICAL [3948 h]; Cost |  | CP2ME23014C0 | PP2AE23003C0 | PA | C | P2 | ER | ME | 230 | 03 | PA | N | BILL 2 | B02 | S1 | 1F | R00 | ACF04 | PA-2 | 230 |  | MEP | M1F | 1S |  |  |
| PP2AE23007C0 |  | PA-P2 ; 2nd Fix, Inst of VAV'S CHW connection (Elec RM)_PA-2 | 42d | 2012-04-14 | 2012-06-02 | PP2AE23001C0 | 126.31d | 84d | MECHANICAL [1088.4 h]; Cost |  | CP2ME23020C0 | PP2AE23007C0 | PA | C | P2 | ER | ME | 230 | 07 | PA | N | BILL 2 | B02 | S1 | 2F | R00 | ACF07 | PA-2 | 230 |  | MEP |  | 2n |  |  |
| PP2AE23004C0 |  | PA-P2 ; 1st Fix, Inst of VCD's/FD's (Elec RM)_PA-2 | 42d | 2012-06-02 | 2012-07-22 | PP2AE23003C0, PP2AE04001C0 | 42.31d | 0d | MECHANICAL [1168.8 h]; Cost |  | CP2ME23016C0 | PP2AE23004C0 | PA | C | P2 | ER | ME | 230 | 04 | PA | N | BILL 2 | B02 | S1 | 1F | R00 | ACF04 | PA-2 | 230 |  | MEP | M1F | 1S |  |  |
| PP2AE23009C0 |  | PA-P2 ; 2nd Fix, Inst of VCD's/FD's (Elec RM)_PA-2 | 42d | 2012-06-02 | 2012-07-22 | PP2AE23003C0 | 84.31d | 42d | MECHANICAL [1168.8 h]; Cost |  | CP2ME23024C0 | PP2AE23009C0 | PA | C | P2 | ER | ME | 230 | 09 | PA | N | BILL 2 | B02 | S1 | 2F | R00 | ACF07 | PA-2 | 230 |  | MEP |  | 2n |  |  |
| PP2AE26001C0 |  | PA-P2 ; 1st Fix, Inst of Trunking/Conduiting (Elec RM)_PA-2 | 42d | 2012-06-02 | 2012-07-22 | PP2AE23001C0, PP2AE04001C0, PP2AE23003C0 | 84.31d | 0d | ELECTRICAL [192 h]; Cost |  | CP2ME26010C0 | PP2AE26001C0 | PA | C | P2 | ER | ME | 260 | 01 | PA | N | BILL 2 | B02 | S1 | 1F | R00 | ACF04 | PA-2 | 260 |  | MEP | M1F | 1S |  |  |
| PP2AE26002C0 |  | PA-P2 ; 1st Fix, Inst of Cable Tray (Elec RM)_PA-2 | 42d | 2012-06-02 | 2012-07-22 | PP2AE23001C0, PP2AE26001C0 SS, PP2AE04001C0, PP2AE23003C0 | 84.31d | 0d | ELECTRICAL [63.6 h]; Cost |  | CP2ME26012C0 | PP2AE26002C0 | PA | C | P2 | ER | ME | 260 | 02 | PA | N | BILL 2 | B02 | S1 | 1F | R00 | ACF04 | PA-2 | 260 |  | MEP | M1F | 1S |  |  |
| PP2AE27002C0 |  | PA-P2 ; 1st Fix, Inst of Trunking for ELV system (Elec RM)_PA-2 | 42d | 2012-06-02 | 2012-07-22 | PP2AE23001C0, PP2AE26002C0 SS, PP2AE04001C0, PP2AE23003C0 | 136.31d | 42d | ELECTRICAL [535.2 h]; Cost |  | CP2ME27010C0 | PP2AE27002C0 | PA | C | P2 | ER | ME | 270 | 02 | PA | N | BILL 2 | B02 | S1 | 1F | R00 | ACF04 | PA-2 | 270 |  | MEP | M1F | 1S |  |  |
| PP2AE23010C0 |  | PA-P2 ; 2nd Fix, Insulation of CHW pipe & Duct (Elec RM)_PA-2 | 42d | 2012-07-22 | 2012-09-11 | PP2AE23001C0, PP2AE23004C0 | 42.31d | 0d | MECHANICAL [3702 h]; Cost |  | CP2ME23026C0 | PP2AE23010C0 | PA | C | P2 | ER | ME | 230 | 10 | PA | N | BILL 2 | B02 | S1 | 2F | R00 | ACF07 | PA-2 | 230 |  | MEP |  | 2n |  |  |
| PP2AE26007C0 |  | PA-P2 ; 2nd Fix, Wiring for Power/Lighting/Emergency (Elec RM)_PA-2 | 42d | 2012-07-22 | 2012-09-11 | PP2AE26001C0 | 94.31d | 34d | ELECTRICAL [76.8 h]; Cost |  | CP2ME26020C0 | PP2AE26007C0 | PA | C | P2 | ER | ME | 260 | 07 | PA | N | BILL 2 | B02 | S1 | 2F | R00 | ACF07 | PA-2 | 260 |  | MEP |  | 2n |  |  |
| PP2AE26008C0 |  | PA-P2 ; 2nd Fix, Cable Pulling (Elec RM)_PA-2 | 42d | 2012-07-22 | 2012-09-11 | PP2AE26002C0 | 94.31d | 34d | ELECTRICAL [4096.8 h]; Cost |  | CP2ME26022C0 | PP2AE26008C0 | PA | C | P2 | ER | ME | 260 | 08 | PA | N | BILL 2 | B02 | S1 | 2F | R00 | ACF07 | PA-2 | 260 |  | MEP |  | 2n |  |  |
| PP2AE27001C0 |  | PA-P2 ; 1st Fix, Wiring/ Cabling work (Elec RM)_PA-2 | 42d | 2012-07-22 | 2012-09-11 | PP2AE27002C0 SS, PP2AE04001C0, PP2AE26002C0 | 94.31d | 34d | ELECTRICAL [76.8 h]; Cost |  | CP2ME27012C0 | PP2AE27001C0 | PA | C | P2 | ER | ME | 270 | 01 | PA | N | BILL 2 | B02 | S1 | 1F | R00 | ACF04 | PA-2 | 270 |  | MEP | M1F | 1S |  |  |
| PP2AE09501C0 |  | PA-P2 ; Ceiling Grid and Service Tile (Elec RM)_PA-2 | 16d | 2012-09-11 | 2012-09-30 | PP2AE23002C0, PP2AE23003C0, PP2AE23004C0, PP2AE23007C0, PP2AE23009C0, PP2AE23010C0, PP2AE26001C0, PP2AE26002C0 | 42.31d | 0d | CEILING GRID FOR GYPSUM [3092.45 h]; CEILING GRID FOR GYPSUM [264.42 m2]; Cost | 1408 | CP2ME09501C0 | PP2AE09501C0 | PA | C | P2 | ER | CE | 095 | 01 | PA | N | BILL 2 | B02 | S1 | 01 | R00 | ACF06 | PA-2 | 095 | 323 |  |  |  |  |  |
| PP2AE08103C0 |  | PA-P2 ; Metal Doors (Elec RM)_PA-2 | 12d | 2012-09-16 | 2012-09-30 | PP2AE08102C0, PP1S103331C460, PP1S103331C470, PP1S103331C450, PP1S903371C10, PP1SX03371C10, PP1SX03373C10, PP2AP21113C10 SS | 98.65d | 0d | METAL DOORS [40 h]; METAL DOORS [4 no]; Cost | 1375 | CP2ME08105C0 | PP2AE08103C0 | PA | C | P2 | ER | DO | 081 | 03 | PA | N | BILL 2 | B02 | S1 | DR | R00 | ACF06 | PA-2 | 081 | 317 |  |  |  | 08 |  |
| PP2AE09203C0 |  | PA-P2 ; Partitions Closing (Elec RM)_PA-2 | 30d | 2012-09-16 | 2012-10-21 | PAFOA09201C1 FF, PP2AE09202C0, PP2AE08102C0 FF, PP1S103331C460, PP1S103331C470, PP1S103331C450, PP1S903371C10, PP1SX03371C10, PP1SX03373C10, PP2AP21113C10 SS | 48.65d | 0d | PARTITIONS [4 m]; PARTITIONS [18 h]; Cost | 1540 | CP2ME09205C0 | PP2AE09203C0 | PA | C | P2 | ER | PT | 092 | 03 | PA | N | BILL 2 | B02 | S1 | FF | R00 | ACF06 | PA-2 | 092 |  | GP | P2F |  |  |  |
| PP2AE09904C0 |  | PA-P2 ; Ceiling - final Paint (Elec RM)_PA-2 | 6d | 2012-09-16 | 2012-09-23 | PP2AE09903C0, PP1S103331C460, PP1S103331C470, PP1S103331C450, PP1S903371C10, PP1SX03371C10, PP1SX03373C10, PP2AP21113C10 SS | 118.65d | 92.34d | ASSORTED CEILING FINISH [9 h]; Cost | 1546 | CP2ME09907C0 | PP2AE09904C0 | PA | C | P2 | ER | PA | 099 | 04 | PA | N | BILL 2 | B02 | S1 | 02 | R00 | ACF06 | PA-2 | 099 |  |  |  |  |  |  |
| PP2AE08701C0 |  | PA-P2 ; Ironmongery (Elec RM)_PA-2 | 14d | 2012-09-30 | 2012-10-16 | PP2AE08103C0, PP1S103331C460, PP1S103331C470, PP1S103331C450, PP1S903371C10, PP1SX03371C10, PP1SX03373C10, PP2AP21113C10 SS | 98.65d | 72.34d | IRONMONGERY [40 h]; IRONMONGERY [4 no]; Cost | 6230 | CP2ME08709C0 | PP2AE08701C0 | PA | C | P2 | ER | DO | 087 | 01 | PA | N | BILL 2 | B02 | S1 | IM | R00 | ACF06 | PA-2 | 087 | 322 |  |  |  | 08 |  |
| PP2AE21104C0 |  | PA-P2 ; 2nd Fix, Inst of Sprinkler droppers (Elec RM)_PA-2 | 42d | 2012-09-30 | 2012-11-21 | PP2AE09501C0 | 101.31d | 82.07d | MECHANICAL [3525.6 h]; Cost |  | CP2ME21120C0 | PP2AE21104C0 | PA | C | P2 | ER | ME | 211 | 04 | PA | N | BILL 2 | B02 | S1 | 2F | R00 | ACF07 | PA-2 | 211 |  | MEP |  | 2n |  |  |
| PP2AE21105C0 |  | PA-P2 ; 2nd Fix, Inst of Zone Control Valve (Elec RM)_PA-2 | 42d | 2012-09-30 | 2012-11-21 | PP2AE09501C0 | 42.31d | 0d | MECHANICAL [1062 h]; Cost |  | CP2ME21124C0 | PP2AE21105C0 | PA | C | P2 | ER | ME | 211 | 05 | PA | N | BILL 2 | B02 | S1 | 2F | R00 | ACF07 | PA-2 | 211 |  | MEP |  | 2n |  |  |
| PP2AE23006C0 |  | PA-P2 ; 2nd Fix, Inst of Flexible Duct & Plenum boxes (Elec RM)_PA-2 | 18d | 2012-09-30 | 2012-10-21 | PP2AE09501C0 | 60.31d | 0d | MECHANICAL [33.6 h]; Cost |  | CP2ME23032C0 | PP2AE23006C0 | PA | C | P2 | ER | ME | 230 | 06 | PA | N | BILL 2 | B02 | S1 | FF | R00 | ACF07 | PA-2 | 230 |  | MEP |  | FF |  |  |
| PP2AE23008C0 |  | PA-P2 ; 2nd Fix, Inst of Equipment (FCU,FAN,PUMP) (Elec RM)_PA-2 | 42d | 2012-09-30 | 2012-11-21 | PP2AE21105C0 SS | 42.31d | 0d | MECHANICAL [2304 h]; Cost |  | CP2ME23022C0 | PP2AE23008C0 | PA | C | P2 | ER | ME | 230 | 08 | PA | N | BILL 2 | B02 | S1 | 2F | R00 | ACF04 | PA-2 | 230 |  | MEP |  | 2n |  | H |
| PP2AE26004C0 |  | PA-P2 ; Final Fix, Inst of Ceiling rose (Elec RM)_PA-2 | 18d | 2012-09-30 | 2012-10-21 | PP2AE09501C0, PP1S103331C460, PP1S103331C470, PP1S103331C450, PP1S903371C10, PP1SX03371C10, PP1SX03373C10, PP2AP21113C10 SS | 94.31d | 68d | ELECTRICAL [25.2 h]; Cost |  | CP2ME26032C0 | PP2AE26004C0 | PA | C | P2 | ER | ME | 260 | 04 | PA | N | BILL 2 | B02 | S1 | FF | R00 | ACF07 | PA-2 | 260 |  | MEP |  | FF |  |  |
| PP2AE26009C0 |  | PA-P2 ; 2nd Fix, Inst of Equipment (DB, TR, SG) (Elec RM)_PA-2 | 42d | 2012-09-30 | 2012-11-21 | PP2AE27006C0 SS | 52.31d | 0d | ELECTRICAL [1192.8 h]; Cost |  | CP2ME26024C0 | PP2AE26009C0 | PA | C | P2 | ER | ME | 260 | 09 | PA | N | BILL 2 | B02 | S1 | 2F | R00 | ACF04 | PA-2 | 260 |  | MEP |  | 2n |  | E |
| PP2AE27005C0 |  | PA-P2 ; 2nd Fix, Wiring Droppers (Elec RM)_PA-2 | 42d | 2012-09-30 | 2012-11-21 | PP2AE09501C0 | 101.31d | 82.07d | ELECTRICAL [76.8 h]; Cost |  | CP2ME27022C0 | PP2AE27005C0 | PA | C | P2 | ER | ME | 270 | 05 | PA | N | BILL 2 | B02 | S1 | 2F | R00 | ACF07 | PA-2 | 270 |  | MEP |  | 2n |  |  |
| PP2AE27006C0 |  | PA-P2 ; 2nd Fix, Inst of ELV Equipment (Panels) (Elec RM)_PA-2 | 42d | 2012-09-30 | 2012-11-21 | PP2AE23008C0 SS | 52.31d | 0d | ELECTRICAL [183.6 h]; Cost |  | CP2ME27020C0 | PP2AE27006C0 | PA | C | P2 | ER | ME | 270 | 06 | PA | N | BILL 2 | B02 | S1 | 2F | R00 | ACF04 | PA-2 | 270 |  | MEP |  | 2n |  | E |
| PP2AE09902C0 |  | PA-P2 ; Wall Prime & 1st coat (Elec RM)_PA-2 | 18d | 2012-10-21 | 2012-11-13 | PP2AE09203C0 | 48.65d | 0d | WALL PAINT [475 h]; WALL PAINT [592 m2]; Cost | 1378 | CP2ME09901C0 | PP2AE09902C0 | PA | C | P2 | ER | PA | 099 | 02 | PA | N | BILL 2 | B02 | S1 | 01 | R00 | ACF06 | PA-2 | 099 | 328 |  |  |  |  |  |
| PP2AE09502C0 |  | PA-P2 ; Ceiling closure (Elec RM)_PA-2 | 16d | 2012-10-21 | 2012-11-11 | OGNMU00023S0, OGNMU00037S0, PP2AE09501C0, PP2AE23006C0, PP2AE26007C0, PP2AE26008C0, PP2AE27001C0, PP1S103331C460, PP1S103331C470, PP1S103331C450, PP1S903371C10, PP1SX03371C10, PP1SX03373C10, PP2AP21113C10 SS | 60.31d | 0d | ASSORTED CEILING FINISH [174.66 h]; CEILING GYPSUM [86.72 h]; ASSORTED CEILING FINISH [284 m2]; CEILING GYPSUM [264 m2]; Cost | 1409 | CP2ME09503C0 | PP2AE09502C0 | PA | C | P2 | ER | CE | 095 | 02 | PA | N | BILL 2 | B02 | S1 | 02 | R00 | ACF06 | PA-2 | 095 | 324 |  |  |  |  |  |
| PP2AE21101C0 |  | PA-P2 ; Final Fix, Gaseous Fire Suppression Electrical Room (Elec RM)_PA-2 | 18d | 2012-11-11 | 2012-12-04 | PP2AE09502C0, PP1S103331C460, PP1S103331C470, PP1S103331C450, PP1S903371C10, PP1SX03371C10, PP1SX03373C10, PP2AP21113C10 SS | 60.31d | 34d | MECHANICAL [697.2 h]; Cost |  | CP2ME21109C0 | PP2AE21101C0 | PA | C | P2 | ER | ME | 211 | 01 | PA | N | BILL 2 | B02 | S1 | FF | R00 | ACF07 | PA-2 | 211 |  | MEP |  | FF |  |  |
| PP2AE21102C0 |  | PA-P2 ; Final Fix, Gaseous Fire Suppression Transformer room (Elec RM)_PA-2 | 18d | 2012-11-11 | 2012-12-04 | PP2AE09502C0, PP1S103331C460, PP1S103331C470, PP1S103331C450, PP1S903371C10, PP1SX03371C10, PP1SX03373C10, PP2AP21113C10 SS | 60.31d | 34d | MECHANICAL [697.2 h]; Cost |  | CP2ME21111C0 | PP2AE21102C0 | PA | C | P2 | ER | ME | 211 | 02 | PA | N | BILL 2 | B02 | S1 | FF | R00 | ACF07 | PA-2 | 211 |  | MEP |  | FF |  |  |
| PP2AE21103C0 |  | PA-P2 ; Final Fix, Gaseous Fire Suppression Telecom Room (Elec RM)_PA-2 | 18d | 2012-11-11 | 2012-12-04 | PP2AE09502C0, PP1S103331C460, PP1S103331C470, PP1S103331C450, PP1S903371C10, PP1SX03371C10, PP1SX03373C10, PP2AP21113C10 SS | 60.31d | 34d | MECHANICAL [697.2 h]; Cost |  | CP2ME21113C0 | PP2AE21103C0 | PA | C | P2 | ER | ME | 211 | 03 | PA | N | BILL 2 | B02 | S1 | FF | R00 | ACF07 | PA-2 | 211 |  | MEP |  | FF |  |  |
| PP2AE23005C0 |  | PA-P2 ; Final Fix, Inst of Grilles & Diffusers (Elec RM)_PA-2 | 18d | 2012-11-11 | 2012-12-04 | PP2AE09502C0, PP1S103331C460, PP1S103331C470, PP1S103331C450, PP1S903371C10, PP1SX03371C10, PP1SX03373C10, PP2AP21113C10 SS | 60.31d | 34d | MECHANICAL [495.6 h]; Cost |  | CP2ME23030C0 | PP2AE23005C0 | PA | C | P2 | ER | ME | 230 | 05 | PA | N | BILL 2 | B02 | S1 | FF | R00 | ACF07 | PA-2 | 230 |  | MEP |  | FF |  |  |
| PP2AE26003C0 |  | PA-P2 ; Final Fix, Termination & Gladding of Cables (Elec RM)_PA-2 | 18d | 2012-11-11 | 2012-12-04 | PP2AE09502C0, PP1S103331C460, PP1S103331C470, PP1S103331C450, PP1S903371C10, PP1SX03371C10, PP1SX03373C10, PP2AP21113C10 SS, PV09GZ10254R2 FF | 60.31d | 34d | ELECTRICAL [512.4 h]; Cost |  | CP2ME26030C0 | PP2AE26003C0 | PA | C | P2 | ER | ME | 260 | 03 | PA | N | BILL 2 | B02 | S1 | FF | R00 | ACF07 | PA-2 | 260 |  | MEP |  | FF |  |  |
| PP2AE26005C0 |  | PA-P2 ; Final Fix, Inst of Switch/Sockets (Elec RM)_PA-2 | 18d | 2012-11-11 | 2012-12-04 | PP2AE09502C0, PP1S103331C460, PP1S103331C470, PP1S103331C450, PP1S903371C10, PP1SX03371C10, PP1SX03373C10, PP2AP21113C10 SS | 60.31d | 34d | ELECTRICAL [124.8 h]; Cost |  | CP2ME26034C0 | PP2AE26005C0 | PA | C | P2 | ER | ME | 260 | 05 | PA | N | BILL 2 | B02 | S1 | FF | R00 | ACF07 | PA-2 | 260 |  | MEP |  | FF |  |  |
| PP2AE26006C0 |  | PA-P2 ; Final Fix, Inst of Light fittings (Elec RM)_PA-2 | 18d | 2012-11-11 | 2012-12-04 | PP2AE09502C0, PP1S103331C460, PP1S103331C470, PP1S103331C450, PP1S903371C10, PP1SX03371C10, PP1SX03373C10, PP2AP21113C10 SS | 60.31d | 34d | ELECTRICAL [3124.8 h]; Cost |  | CP2ME26039C0 | PP2AE26006C0 | PA | C | P2 | ER | ME | 260 | 06 | PA | N | BILL 2 | B02 | S1 | FF | R00 | ACF07 | PA-2 | 260 |  | MEP |  | FF |  |  |
| PP2AE27004C0 |  | PA-P2 ; Final Fix, Inst of ELV device (Detector/Speaker) (Elec RM)_PA-2 | 18d | 2012-11-11 | 2012-12-04 | PP2AE09502C0, PP1S103331C460, PP1S103331C470, PP1S103331C450, PP1S903371C10, PP1SX03371C10, PP1SX03373C10, PP2AP21113C10 SS | 60.31d | 34d | ELECTRICAL [78 h]; Cost |  | CP2ME27030C0 | PP2AE27004C0 | PA | C | P2 | ER | ME | 270 | 04 | PA | N | BILL 2 | B02 | S1 | FF | R00 | ACF07 | PA-2 | 270 |  | MEP |  | FF |  |  |
| PP2AE05501C0 |  | PA-P2 ; Handrails & balustrade (Elec RM)_PA-2 | 25d | 2012-11-13 | 2012-12-15 | PP2AE09902C0, PP1S103331C460, PP1S103331C470, PP1S103331C450, PP1S903371C10, PP1SX03371C10, PP1SX03373C10, PP2AP21113C10 SS | 51.65d | 25.34d | SECONDARY STEEL [146 h]; Cost |  | CP2ME05501C0 | PP2AE05501C0 | PA | C | P2 | ER | SW | 055 | 01 | PA | N | BILL 2 | B02 | S1 | 01 | R00 | ACF03 | PA-2 | a |  |  |  |  |  |  |
| PP2AE08106C0 |  | PA-P2 ; Access Floor (Elec RM)_PA-2 | 15d | 2012-11-13 | 2012-12-02 | PP2AE09902C0 | 61.65d | 35.34d | ASSORTED FLOOR FINISH [144 h]; ASSORTED FLOOR FINISH [79 m2]; Cost | 1375 | CP2ER08105C0 |  | PA | C | P2 | ER | FF | 096 | 06 | PA | N | BILL 2 | B02 | S1 | 04 | R00 | ACF06 | PA-2 | AF | 317 |  |  |  | 08 |  |
| PP2AE09901C0 |  | PA-P2 ; Wall - final Paint (Elec RM)_PA-2 | 15d | 2012-11-13 | 2012-12-02 | PP2AE09902C0, PP1S103331C460, PP1S103331C470, PP1S103331C450, PP1S903371C10, PP1SX03371C10, PP1SX03373C10, PP2AP21113C10 SS | 61.65d | 35.34d | WALL PAINT [257 h]; WALL PAINT [319 m2]; Cost | 1379 | CP2ME09903C0 | PP2AE09901C0 | PA | C | P2 | ER | PA | 099 | 01 | PA | N | BILL 2 | B02 | S1 | 02 | R00 | ACF06 | PA-2 | 099 | 329 |  |  |  |  |  |
| PP2AE09601C0 |  | PA-P2 ; Flooring (Elec RM)_PA-2 | 10d | 2012-11-21 | 2012-12-04 | PP2AE09902C0, PP2AE09903C0, PP2AE23008C0, PP1S103331C460, PP1S103331C470, PP1S103331C450, PP1S903371C10, PP1SX03371C10, PP1SX03373C10, PP2AP21113C10 SS | 42.31d | 0d | ASSORTED FLOOR FINISH [2040 h]; ASSORTED FLOOR FINISH [1132 m2]; Cost | 1377 | CP2ME09601C0 | PP2AE09601C0 | PA | C | P2 | ER | FF | 096 | 01 | PA | N | BILL 2 | B02 | S1 | 01 | R00 | ACF06 | PA-2 | FF | 326 |  |  |  |  |  |
| PP2AE27003C0 |  | PA-P2 ; Final Fix, BMS connection work to Equipment (Elec RM)_PA-2 | 18d | 2012-11-21 | 2012-12-13 | PP2AE26009C0, PP1S103331C460, PP1S103331C470, PP1S103331C450, PP1S903371C10, PP1SX03371C10, PP1SX03373C10, PP2AP21113C10 SS | 52.31d | 26d | ELECTRICAL [2335.2 h]; Cost |  | CP2ME27032C0 | PP2AE27003C0 | PA | C | P2 | ER | ME | 270 | 03 | PA | N | BILL 2 | B02 | S1 | FF | R00 | ACF07 | PA-2 | 270 |  | MEP |  | FF |  |  |
| PP2AE22001C0 |  | PA-P2 ; Final Fix, Inst of All drain (Elec RM)_PA-2 | 18d | 2012-12-04 | 2012-12-25 | PP2AE09601C0, PP1S103331C460, PP1S103331C470, PP1S103331C450, PP1S903371C10, PP1SX03371C10, PP1SX03373C10, PP2AP21113C10 SS | 42.31d | 16d | PLUMBING [2156.4 h]; Cost |  | CP2ME22037C0 | PP2AE22001C0 | PA | C | P2 | ER | ME | 220 | 01 | PA | N | BILL 2 | B02 | S1 | FF | R00 | ACF07 | PA-2 | 220 |  | MEP |  | FF |  |  |

| ID | WBS | Activity | Duration | Start | Finish | Predecessors | Total float | Free float | Resources | Change Order # | NEW ACTIVITY ID | change id | IDDD | CCAD BUILDING(SET) | CCAD PHASE(SET) | CCAD FLOOR(SET) | CCAD ZONE(SET) | CCAD WORK(SET) | CCAD SECTION(SET) | CCAD SERIAL No.(SET) | CCAD Carpark code(SET) | CCAD Carpark district code(set) | CCAD CBS(SET) | CCAD BILL(SET) | CCAD HANDOVER(SET) | CCAD TAG(SET) | CCAD REV(SET) | CCADACF (SET) | FSP CODE | CCAD SSCF | CCAD SUB ZONE MEP(SET) | CCAD CSA | Act Selector % | CCAD MEQ | CCAD DIVISION(SET) |
| --- | --- | --- | --- | --- | --- | --- | --- | --- | --- | --- | --- | --- | --- | --- | --- | --- | --- | --- | --- | --- | --- | --- | --- | --- | --- | --- | --- | --- | --- | --- | --- | --- | --- | --- | --- |
|  | AM2 | **MECHANICAL ROOMS (2 NOS.) : Zone PA-2** |  | 2012-02-02 | 2013-01-14 |  |  |  |  |  |  |  |  |  |  |  |  |  |  |  |  |  |  |  |  |  |  |  |  |  |  |  |  |  |  |
| PP2AM09902C0 |  | PA-P2 ; Wall Prime & 1st coat (Mech RM)_PA-2 | 18d | 2012-02-02 | 2012-02-25 | PP1SX03372C0, PP1SX03373C0, PP3AM09902C0 | 26.31d | 0d | WALL PAINT [1817 h]; WALL PAINT [2268 m2]; Cost | 328 | 1469 | C04ME09901C0 | PP2AM09902C0 | PA | C | P2 | M1 | PA | 099 | 02 | PA | N | BILL 2 | B02 | S1 | 01 | R00 | ACF06 | PA-2 | 099 |  |  |  |  |  |
| PP2AM04001C0 |  | PA-P2 ; Block Wall Works (Mech RM)_PA-2 | 30d | 2012-02-25 | 2012-03-31 | PP2AM09902C0 | 26.31d | 0d | BLOCKWORKS [2314 h]; BLOCKWORKS [661 m2]; Cost |  |  | AP2M104001C0 | PP2AM04001C0 | PA | C | P2 | M1 | BL | 040 | 01 | PA | N | BILL 2 | B02 | S1 | BL | R00 | ACF06 | PA-2 | 040 |  |  |  |  |  |
| PP2AM23003C0 |  | PA-P2 ; 1st Fix, Inst. of Supports for MEP (Mech RM)_PA-2 | 12d | 2012-03-31 | 2012-04-14 | PP2AM04001C0 | 26.31d | 0d | MECHANICAL [625.2 h]; Cost |  |  | C04ME23001C0 | PP2AM23003C0 | PA | C | P2 | M1 | ME | 230 | 03 | PA | N | BILL 2 | B02 | S1 | 1F | R00 | ACF04 | PA-2 | 230 | 1S | MEP | M1F |  |  |
| PP2AM21102C0 |  | PA-P2 ; 1st Fix, Inst of Sprinkler main pipe (Mech RM)_PA-2 | 42d | 2012-04-14 | 2012-06-02 | PP2AM23003C0, PP2AM04001C0 | 26.31d | 0d | MECHANICAL [9823.2 h]; Cost |  |  | C04ME21111C0 | PP2AM21102C0 | PA | C | P2 | M1 | ME | 211 | 02 | PA | N | BILL 2 | B02 | S1 | 1F | R00 | ACF04 | PA-2 | 211 | 1S | MEP | M1F |  |  |
| PP2AM22001C0 |  | PA-P2 ; 1st Fix, Inst of Drainage pipe (Mech RM)_PA-2 | 42d | 2012-04-14 | 2012-06-02 | PP2AM23003C0, PP2AM04001C0 | 110.31d | 0d | PLUMBING [2156.4 h]; Cost |  |  | C04ME22011C0 | PP2AM22001C0 | PA | C | P2 | M1 | ME | 220 | 01 | PA | N | BILL 2 | B02 | S1 | 1F | R00 | ACF04 | PA-2 | 220 | 1S | MEP | M1F |  |  |
| PP2AM22003C0 |  | PA-P2 ; 1st Fix, Inst of Water supply pipe (Mech RM)_PA-2 | 42d | 2012-04-14 | 2012-06-02 | PP2AM22001C0 SS, PP2AM23003C0, PP2AM04001C0 | 110.31d | 0d | PLUMBING [6082.8 h]; Cost |  |  | C04ME22006C0 | PP2AM22003C0 | PA | C | P2 | M1 | ME | 220 | 03 | PA | N | BILL 2 | B02 | S1 | 1F | R00 | ACF04 | PA-2 | 220 | 1S | MEP | M1F |  |  |
| PP2AM23000C0 |  | PA-P2 ; 2nd Fix, Inst of Equipment (Mech RM)_PA-2 | 42d | 2012-04-14 | 2012-06-02 | PP2AM22001C0 FF, PP2AM22003C0 FF | 110.31d | 0d | Labor General [1.2 h]; Cost |  |  | C04ME23013C0 | PP2AM23000C0 | PA | C | P2 | M1 | ME | 230 | 13 | PA | N | BILL 2 | B02 | S1 | 2F | R00 | ACF04 | PA-2 | 230 | 2n | MEP |  | M |  |
| PP2AM23001C0 |  | PA-P2 ; 1st Fix, Inst of CHW pipe (Mech RM)_PA-2 | 42d | 2012-04-14 | 2012-06-02 | PP2AM23003C0, PP2AM04001C0 | 134.31d | 0d | MECHANICAL [3097.2 h]; Cost |  |  | C04ME23019C0 | PP2AM23001C0 | PA | C | P2 | M1 | ME | 230 | 01 | PA | N | BILL 2 | B02 | S1 | 1F | R00 | ACF04 | PA-2 | 230 | 1S | MEP | M1F |  |  |
| PP2AM09201C0 |  | PA-P2 ; Metal Studs (Mech RM)_PA-2 | 10d | 2012-06-02 | 2012-06-13 | PP2AM04001C0 SS+14d, PP2AM04001C0, PP2AM23000C0 | 122.31d | 0d | PARTITIONS [115 h]; PARTITIONS [16 m]; Cost |  |  | C04ME09201C0 | PP2AM09201C0 | PA | C | P2 | M1 | PT | 092 | 01 | PA | N | BILL 2 | B02 | S1 | 1F | R00 | ACF06 | PA-2 | 092 |  | GP | PMS |  |  |
| PP2AM21101C0 |  | PA-P2 ; 1st Fix, Inst of Sprinkler branch pipe (Mech RM)_PA-2 | 42d | 2012-06-02 | 2012-07-22 | PP2AM04001C0, PP2AM21102C0 | 110.31d | 0d | MECHANICAL [8076 h]; Cost |  |  | C04ME21119C0 | PP2AM21101C0 | PA | C | P2 | M1 | ME | 211 | 01 | PA | N | BILL 2 | B02 | S1 | 1F | R00 | ACF04 | PA-2 | 211 | 1S | MEP | M1F |  |  |
| PP2AM21105C0 |  | PA-P2 ; 2nd Fix, Inst of Zone Control Valve (Mech RM)_PA-2 | 42d | 2012-06-02 | 2012-07-22 | PP2AM23000C0, PP2AM23001C0 | 152.31d | 84d | MECHANICAL [1062 h]; Cost |  |  | C04ME21117C0 | PP2AM21105C0 | PA | C | P2 | M1 | ME | 211 | 05 | PA | N | BILL 2 | B02 | S1 | 2F | R00 | ACF07 | PA-2 | 211 | 2n | MEP |  |  |  |
| PP2AM23002C0 |  | PA-P2 ; 1st Fix, Inst of Ducting (Mech RM)_PA-2 | 42d | 2012-06-02 | 2012-07-22 | PP2AM23003C0, PP2AM04001C0, PP2AM21102C0 | 26.31d | 0d | MECHANICAL [3948 h]; Cost |  |  | C04ME23005C0 | PP2AM23002C0 | PA | C | P2 | M1 | ME | 230 | 02 | PA | N | BILL 2 | B02 | S1 | 1F | R00 | ACF04 | PA-2 | 230 | 1S | MEP | M1F |  |  |
| PP2AM23005C0 |  | PA-P2 ; 2nd Fix, Inst of Equipment (FCU,FAN,PUMP) (Mech RM)_PA-2 | 42d | 2012-06-02 | 2012-07-22 | PP2AM23000C0 | 110.31d | 0d | MECHANICAL [2304 h]; Cost |  |  | C04ME23011C0 | PP2AM23005C0 | PA | C | P2 | M1 | ME | 230 | 05 | PA | N | BILL 2 | B02 | S1 | 2F | R00 | ACF04 | PA-2 | 230 | 2n | MEP |  | H |  |
| PP2AM26004C0 |  | PA-P2 ; 2nd Fix, Inst of Equipment (DB, TR, SG) (Mech RM)_PA-2 | 42d | 2012-06-02 | 2012-07-22 | PP2AM23000C0 | 152.31d | 84d | ELECTRICAL [1192.8 h]; Cost |  |  | C04ME26009C0 | PP2AM26004C0 | PA | C | P2 | M1 | ME | 260 | 04 | PA | N | BILL 2 | B02 | S1 | 2F | R00 | ACF04 | PA-2 | 260 | 2n | MEP |  | E |  |
| PP2AM27003C0 |  | PA-P2 ; 2nd Fix, Inst of ELV Equipment (Panels) (Mech RM)_PA-2 | 42d | 2012-06-02 | 2012-07-22 | PP2AM23000C0 | 152.31d | 45.66d | ELECTRICAL [183.6 h]; Cost |  |  | C04ME27020C0 | PP2AM27003C0 | PA | C | P2 | M1 | ME | 270 | 03 | PA | N | BILL 2 | B02 | S1 | 2F | R00 | ACF04 | PA-2 | 270 | 2n | MEP |  | E |  |
| PP2AM08102C0 |  | PA-P2 ; Metal Door Frames (Mech RM)_PA-2 | 16d | 2012-06-13 | 2012-07-03 | PP2AM09201C0, GNHE08101C0 | 131.31d | 61.66d | METAL DOORS [174 h]; Cost | 316 | 1465 | C04ME08101C0 | PP2AM08102C0 | PA | C | P2 | M1 | DO | 081 | 02 | PA | N | BILL 2 | B02 | S1 | DF | R00 | ACF06 | PA-2 | 081 |  |  |  |  | 08 |
| PP2AM09202C0 |  | PA-P2 ; Partitions 1st face (Mech RM)_PA-2 | 18d | 2012-06-17 | 2012-07-08 | PP2AM09201C0 SS+12d | 122.31d | 57.66d | PARTITIONS [16 m]; PARTITIONS [81 h]; Cost | 314 | 1463 | C04ME09203C0 | PP2AM09202C0 | PA | C | P2 | M1 | PT | 092 | 02 | PA | N | BILL 2 | B02 | S1 | 2F | R00 | ACF06 | PA-2 | 092 |  | GP | P1F |  |  |
| PP2AM21104C0 |  | PA-P2 ; 2nd Fix, Inst of Sprinkler droppers (Mech RM)_PA-2 | 42d | 2012-07-22 | 2012-09-11 | PP2AM21101C0 | 110.31d | 3.66d | MECHANICAL [3525.6 h]; Cost |  |  | C04ME21115C0 | PP2AM21104C0 | PA | C | P2 | M1 | ME | 211 | 04 | PA | N | BILL 2 | B02 | S1 | 2F | R00 | ACF07 | PA-2 | 211 | 2n | MEP |  |  |  |
| PP2AM23006C0 |  | PA-P2 ; 2nd Fix, Inst of VAV'S CHW connection (Mech RM)_PA-2 | 42d | 2012-07-22 | 2012-09-11 | PP2AM23005C0 | 110.31d | 3.66d | MECHANICAL [50.4 h]; Cost |  |  | C04ME23009C0 | PP2AM23006C0 | PA | C | P2 | M1 | ME | 230 | 06 | PA | N | BILL 2 | B02 | S1 | 2F | R00 | ACF07 | PA-2 | 230 | 2n | MEP |  |  |  |
| PP2AM23007C0 |  | PA-P2 ; 2nd Fix, Inst of VCD's/FD's (Mech RM)_PA-2 | 42d | 2012-07-22 | 2012-09-11 | PP2AM23002C0 | 92.31d | 0d | MECHANICAL [1168.8 h]; Cost |  |  | C04ME23015C0 | PP2AM23007C0 | PA | C | P2 | M1 | ME | 230 | 07 | PA | N | BILL 2 | B02 | S1 | 2F | R00 | ACF07 | PA-2 | 230 | 2n | MEP |  |  |  |
| PP2AM23008C0 |  | PA-P2 ; 2nd Fix, Insulation of CHW pipe & Duct (Mech RM)_PA-2 | 42d | 2012-07-22 | 2012-09-11 | PP2AM23001C0, PP2AM23002C0 | 92.31d | 0d | MECHANICAL [3702 h]; Cost |  |  | C04ME23017C0 | PP2AM23008C0 | PA | C | P2 | M1 | ME | 230 | 08 | PA | N | BILL 2 | B02 | S1 | 2F | R00 | ACF07 | PA-2 | 230 | 2n | MEP |  |  |  |
| PP2AM26001C0 |  | PA-P2 ; 1st Fix, Inst of Cable Tray (Mech RM)_PA-2 | 42d | 2012-07-22 | 2012-09-11 | PP2AM04001C0, PP2AM23002C0 | 26.31d | 0d | ELECTRICAL [63.6 h]; Cost |  |  | C04ME26011C0 | PP2AM26001C0 | PA | C | P2 | M1 | ME | 260 | 01 | PA | N | BILL 2 | B02 | S1 | 1F | R00 | ACF04 | PA-2 | 260 | 1S | MEP | M1F |  |  |
| PP2AM26002C0 |  | PA-P2 ; 1st Fix, Inst of Trunking/Conduiting (Mech RM)_PA-2 | 42d | 2012-07-22 | 2012-09-11 | PP2AM23003C0, PP2AM04001C0, PP2AM23002C0 | 68.31d | 42d | ELECTRICAL [192 h]; Cost |  |  | C04ME26001C0 | PP2AM26002C0 | PA | C | P2 | M1 | ME | 260 | 02 | PA | N | BILL 2 | B02 | S1 | 1F | R00 | ACF04 | PA-2 | 260 | 1S | MEP | M1F |  |  |
| PP2AM27001C0 |  | PA-P2 ; 1st Fix, Inst of Trunking for ELV system (Mech RM)_PA-2 | 42d | 2012-07-22 | 2012-09-11 | PP2AM23002C0 SS, PP2AM04001C0, PP2AM23002C0 | 26.31d | 0d | ELECTRICAL [535.2 h]; Cost |  |  | C04ME27010C0 | PP2AM27001C0 | PA | C | P2 | M1 | ME | 270 | 01 | PA | N | BILL 2 | B02 | S1 | 1F | R00 | ACF04 | PA-2 | 270 | 1S | MEP | M1F |  |  |
| PP2AM23009C0 |  | PA-P2 ; 2nd Fix, Inst of Flexible Duct & Plenum boxes (Mech RM)_PA-2 | 18d | 2012-09-11 | 2012-10-02 | PP2AM23007C0, PP2AM23008C0 | 92.31d | 0d | MECHANICAL [33.6 h]; Cost |  |  | C04ME23023C0 | PP2AM23009C0 | PA | C | P2 | M1 | ME | 230 | 09 | PA | N | BILL 2 | B02 | S1 | FF | R00 | ACF07 | PA-2 | 230 | FF | MEP |  |  |  |
| PP2AM26003C0 |  | PA-P2 ; 2nd Fix, Cable Pulling (Mech RM)_PA-2 | 42d | 2012-09-11 | 2012-11-01 | PP2AM26001C0 | 26.31d | 0d | ELECTRICAL [4096.8 h]; Cost |  |  | C04ME26007C0 | PP2AM26003C0 | PA | C | P2 | M1 | ME | 260 | 03 | PA | N | BILL 2 | B02 | S1 | 2F | R00 | ACF07 | PA-2 | 260 | 2n | MEP |  |  |  |
| PP2AM27002C0 |  | PA-P2 ; 1st Fix, Wiring/ Cabling work (Mech RM)_PA-2 | 42d | 2012-09-11 | 2012-11-01 | PP2AM26001C0 SS, PP2AM26002C0 SS, PP2AM27001C0 SS, PP2AM04001C0, PP2AM27001C0 | 26.31d | 0d | ELECTRICAL [307.2 h]; Cost |  |  | C04ME27001C0 | PP2AM27002C0 | PA | C | P2 | M1 | ME | 270 | 02 | PA | N | BILL 2 | B02 | S1 | 1F | R00 | ACF04 | PA-2 | 270 | 1S | MEP | M1F |  |  |
| PP2AM08103C0 |  | PA-P2 ; Metal Doors (Mech RM)_PA-2 | 16d | 2012-09-16 | 2012-10-04 | PP2AM08102C0, PP1S103331C460, PP1S103331C470, PP1S103331C450, PP1S903371C10, PP1SX03371C10, PP1SX03373C10, PP2AP21113C10 SS | 69.65d | 0d | METAL DOORS [150 h]; METAL DOORS [15 no]; Cost | 317 | 1466 | C04ME08105C0 | PP2AM08103C0 | PA | C | P2 | M1 | DO | 081 | 03 | PA | N | BILL 2 | B02 | S1 | DR | R00 | ACF06 | PA-2 | 081 |  |  |  |  | 08 |
| PP2AM09203C0 |  | PA-P2 ; Partitions Closing (Mech RM)_PA-2 | 30d | 2012-09-16 | 2012-10-21 | PAFOA09201C1 FF, PP2AM09202C0, PP2AM22001C0, PP2AM22003C0, PP2AM08102C0 FF, PP1S103331C460, PP1S103331C470, PP1S103331C450, PP1S903371C10, PP1SX03371C10, PP1SX03373C10, PP2AP21113C10 SS | 64.65d | 0d | PARTITIONS [16 m]; PARTITIONS [109 h]; Cost | 315 | 1464 | C04ME09205C0 | PP2AM09203C0 | PA | C | P2 | M1 | PT | 092 | 03 | PA | N | BILL 2 | B02 | S1 | FF | R00 | ACF06 | PA-2 | 092 |  | GP | P2F |  |  |
| PP2AM09901C0 |  | PA-P2 ; Wall - final Paint (Mech RM)_PA-2 | 18d | 2012-09-16 | 2012-10-07 | PP2AM09902C0, PP1S103331C460, PP1S103331C470, PP1S103331C450, PP1S903371C10, PP1SX03371C10, PP1SX03373C10, PP2AP21113C10 SS | 106.65d | 80.34d | WALL PAINT [979 h]; WALL PAINT [1221 m2]; Cost | 329 | 1470 | C04ME09903C0 | PP2AM09901C0 | PA | C | P2 | M1 | PA | 099 | 01 | PA | N | BILL 2 | B02 | S1 | 02 | R00 | ACF06 | PA-2 | 099 |  |  |  |  |  |
| PP2AM21107C0 |  | PA-P2 ; Final Fix, Inst of Sprinklers head (Mech RM)_PA-2 | 18d | 2012-09-16 | 2012-10-07 | PP2AM21104C0, PP1S103331C460, PP1S103331C470, PP1S103331C450, PP1S903371C10, PP1SX03371C10, PP1SX03373C10, PP2AP21113C10 SS | 106.65d | 80.34d | MECHANICAL [1396.8 h]; Cost |  |  | C04ME21121C0 | PP2AM21107C0 | PA | C | P2 | M1 | ME | 211 | 07 | PA | N | BILL 2 | B02 | S1 | FF | R00 | ACF07 | PA-2 | 211 | FF | MEP |  |  |  |
| PP2AM26007C0 |  | PA-P2 ; Final Fix, Inst of Light fittings (Mech RM)_PA-2 | 18d | 2012-09-16 | 2012-10-07 | PP2AM09902C0, PP1S103331C460, PP1S103331C470, PP1S103331C450, PP1S903371C10, PP1SX03371C10, PP1SX03373C10, PP2AP21113C10 SS | 106.65d | 80.34d | ELECTRICAL [3124.8 h]; Cost |  |  | C04ME26019C0 | PP2AM26007C0 | PA | C | P2 | M1 | ME | 260 | 07 | PA | N | BILL 2 | B02 | S1 | FF | R00 | ACF07 | PA-2 | 260 | FF | MEP |  |  |  |
| PP2AM26008C0 |  | PA-P2 ; Final Fix, Inst of Switch/Sockets (Mech RM)_PA-2 | 18d | 2012-09-16 | 2012-10-07 | PP2AM09902C0, PP1S103331C460, PP1S103331C470, PP1S103331C450, PP1S903371C10, PP1SX03371C10, PP1SX03373C10, PP2AP21113C10 SS | 106.65d | 80.34d | ELECTRICAL [124.8 h]; Cost |  |  | C04ME26017C0 | PP2AM26008C0 | PA | C | P2 | M1 | ME | 260 | 08 | PA | N | BILL 2 | B02 | S1 | FF | R00 | ACF07 | PA-2 | 260 | FF | MEP |  |  |  |
| PP2AM27005C0 |  | PA-P2 ; Final Fix, Inst of ELV device (Detector/Speaker) (Mech RM)_PA-2 | 18d | 2012-09-16 | 2012-10-07 | PP2AM09902C0, PP2AM23006C0, PP2AM27003C0, PP1S103331C460, PP1S103331C470, PP1S103331C450, PP1S903371C10, PP1SX03371C10, PP1SX03373C10, PP2AP21113C10 SS | 106.65d | 80.34d | ELECTRICAL [78 h]; Cost |  |  | C04ME27030C0 | PP2AM27005C0 | PA | C | P2 | M1 | ME | 270 | 05 | PA | N | BILL 2 | B02 | S1 | FF | R00 | ACF07 | PA-2 | 270 | FF | MEP |  |  |  |
| PP2AM23010C0 |  | PA-P2 ; Final Fix, Inst of Grilles & Diffusers (Mech RM)_PA-2 | 18d | 2012-10-02 | 2012-10-23 | PP2AM23009C0, PP1S103331C460, PP1S103331C470, PP1S103331C450, PP1S903371C10, PP1SX03371C10, PP1SX03373C10, PP2AP21113C10 SS | 92.31d | 66d | MECHANICAL [495.6 h]; Cost |  |  | C04ME23021C0 | PP2AM23010C0 | PA | C | P2 | M1 | ME | 230 | 10 | PA | N | BILL 2 | B02 | S1 | FF | R00 | ACF07 | PA-2 | 230 | FF | MEP |  |  |  |
| PP2AM08101C0 |  | PA-P2 ; Al / Glass doors (Mech RM)_PA-2 | 19d | 2012-10-04 | 2012-10-29 | PP2AM08103C0, PP1S103331C460, PP1S103331C470, PP1S103331C450, PP1S903371C10, PP1SX03371C10, PP1SX03373C10, PP2AP21113C10 SS | 69.65d | 0d | ASSORTED DOORS [250 h]; ASSORTED DOORS [25 no]; Cost |  |  | C04ME08109C0 | PP2AM08101C0 | PA | C | P2 | M1 | DO | 081 | 01 | PA | N | BILL 2 | B02 | S1 | 03 | R00 | ACF06 | PA-2 | 081 |  |  |  |  |  |
| PP2AM09601C0 |  | PA-P2 ; Floor Finishes (Mech RM)_PA-2 | 30d | 2012-10-21 | 2012-11-28 | PP2AM09203C0, PP1S103331C460, PP1S103331C470, PP1S103331C450, PP1S903371C10, PP1SX03371C10, PP1SX03373C10, PP2AP21113C10 SS | 64.65d | 0d | ASSORTED FLOOR FINISH [7816 h]; ASSORTED FLOOR FINISH [4340 m2]; Cost | 326 | 1501 | C04ME09601C0 | PP2AM09601C0 | PA | C | P2 | M1 | FF | 096 | 01 | PA | N | BILL 2 | B02 | S1 | 01 | R00 | ACF06 | PA-2 | FF |  |  |  |  |  |
| PP2AM21106C0 |  | PA-P2 ; Final Fix, Inst of Fire Extinguishers/FHC (Mech RM)_PA-2 | 18d | 2012-10-21 | 2012-11-13 | PP2AM09203C0, PP1S103331C460, PP1S103331C470, PP1S103331C450, PP1S903371C10, PP1SX03371C10, PP1SX03373C10, PP2AP21113C10 SS | 76.65d | 50.34d | MECHANICAL [2016 h]; Cost |  |  | C04ME21123C0 | PP2AM21106C0 | PA | C | P2 | M1 | ME | 211 | 06 | PA | N | BILL 2 | B02 | S1 | FF | R00 | ACF07 | PA-2 | 211 | FF | MEP |  |  |  |
| PP2AM26006C0 |  | PA-P2 ; Final Fix, Inst of Ceiling rose (Mech RM)_PA-2 | 18d | 2012-10-21 | 2012-11-13 | PP2AM09203C0, PP1S103331C460, PP1S103331C470, PP1S103331C450, PP1S903371C10, PP1SX03371C10, PP1SX03373C10, PP2AP21113C10 SS | 76.65d | 50.34d | ELECTRICAL [25.2 h]; Cost |  |  | C04ME26015C0 | PP2AM26006C0 | PA | C | P2 | M1 | ME | 260 | 06 | PA | N | BILL 2 | B02 | S1 | FF | R00 | ACF07 | PA-2 | 260 | FF | MEP |  |  |  |
| PP2AM08701C0 |  | PA-P2 ; Ironmongery (Mech RM)_PA-2 | 20d | 2012-10-29 | 2012-11-22 | PP2AM08101C0, PP2AM08103C0, PP1S103331C460, PP1S103331C470, PP1S103331C450, PP1S903371C10, PP1SX03371C10, PP1SX03373C10, PP2AP21113C10 SS | 69.65d | 43.34d | IRONMONGERY [160 h]; IRONMONGERY [16 no]; Cost | 322 | 1467 | C04ME08709C0 | PP2AM08701C0 | PA | C | P2 | M1 | DO | 087 | 01 | PA | N | BILL 2 | B02 | S1 | IM | R00 | ACF06 | PA-2 | 087 |  |  |  |  | 08 |
| PP2AM26005C0 |  | PA-P2 ; 2nd Fix, Wiring for Power/Lighting/Emergency (Mech RM)_PA-2 | 42d | 2012-11-01 | 2012-12-23 | PP2AM26001C0, PP2AM26002C0, PP2AM26003C0, PP2AM27001C0, PP2AM27002C0 | 26.31d | 0d | ELECTRICAL [76.8 h]; Cost |  |  | C04ME26005C0 | PP2AM26005C0 | PA | C | P2 | M1 | ME | 260 | 05 | PA | N | BILL 2 | B02 | S1 | 2F | R00 | ACF07 | PA-2 | 260 | 2n | MEP |  |  |  |
| PP2AM27004C0 |  | PA-P2 ; Final Fix, BMS connection work to Equipment (Mech RM)_PA-2 | 18d | 2012-11-01 | 2012-11-24 | PP2AM21105C0, PP2AM23000C0, PP2AM23005C0, PP2AM23007C0, PP2AM26004C0, PP2AM27002C0, PP2AM27003C0, PP1S103331C460, PP1S103331C470, PP1S103331C450, PP1S903371C10, PP1SX03371C10, PP1SX03373C10, PP2AP21113C10 SS | 68.31d | 42d | ELECTRICAL [2335.2 h]; Cost |  |  | C04ME27003C0 | PP2AM27004C0 | PA | C | P2 | M1 | ME | 270 | 04 | PA | N | BILL 2 | B02 | S1 | FF | R00 | ACF07 | PA-2 | 270 | FF | MEP |  |  |  |
| PP2AM22004C0 |  | PA-P2 ; Final Fix, Inst of All drain (Mech RM)_PA-2 | 18d | 2012-11-06 | 2012-11-28 | PP2AM09601C0 FF, PP1S103331C460, PP1S103331C470, PP1S103331C450, PP1S903371C10, PP1SX03371C10, PP1SX03373C10, PP2AP21113C10 SS | 64.65d | 38.34d | PLUMBING [2156.4 h]; Cost |  |  | C04ME22003C0 | PP2AM22004C0 | PA | C | P2 | M1 | ME | 220 | 04 | PA | N | BILL 2 | B02 | S1 | FF | R00 | ACF07 | PA-2 | 220 | FF | MEP |  |  |  |
| PP2AM26009C0 |  | PA-P2 ; Final Fix, Termination & Gladding of Cables (Mech RM)_PA-2 | 18d | 2012-12-23 | 2013-01-14 | PP2AM09203C0, PP2AM26005C0, PP1S103331C460, PP1S103331C470, PP1S103331C450, PP1S903371C10, PP1SX03371C10, PP1SX03373C10, PP2AP21113C10 SS | 26.31d | 0d | ELECTRICAL [512.4 h]; Cost |  |  | C04ME26013C0 | PP2AM26009C0 | PA | C | P2 | M1 | ME | 260 | 09 | PA | N | BILL 2 | B02 | S1 | FF | R00 | ACF07 | PA-2 | 260 | FF | MEP |  |  |  |

| ID | WBS | Activity | Duration | Start | Finish | Predecessors | Total float | Free float | Resources | Change Order # | NEW ACTIVITY ID | change id | IDDD | CCAD BUILDING(SET) | CCAD PHASE(SET) | CCAD FLOOR(SET) | CCAD ZONE(SET) | CCAD WORK(SET) | CCAD SECTION(SET) | CCAD SERIAL No.(SET) | CCAD Carpark code(SET) | CCAD Carpark district code(set) | CCAD CBS(SET) | CCAD BILL(SET) | CCAD HANDOVER(SET) | CCAD TAG(SET) | CCAD REV(SET) | CCADACF (SET) | FSP CODE | CCAD SSCF | CCAD SUB ZONE MEP(SET) | CCAD CSA | Act Selector % |
| --- | --- | --- | --- | --- | --- | --- | --- | --- | --- | --- | --- | --- | --- | --- | --- | --- | --- | --- | --- | --- | --- | --- | --- | --- | --- | --- | --- | --- | --- | --- | --- | --- | --- |
|  | BP1 | **PARKING AREA : Zone PB-1** |  | 2012-02-05 | 2013-01-14 |  |  |  |  |  |  |  |  |  |  |  |  |  |  |  |  |  |  |  |  |  |  |  |  |  |  |  |  |
| PP2BP09901C10 |  | PA-P2 ; Prime & 1st coat (Wall & Ceiling) (Parking Area)_PB-1 | 18d | 2012-02-05 | 2012-02-26 | PGLS103391C100 SS, PGLS103391C110 SS, PP3BP09901C10 | 43.5d | 0d | CEILING PAINT [1513 h]; WALL PAINT [327 h]; CEILING PAINT [1887.5 m2]; WALL PAINT [407.75 m2]; Cost | 328 | 956 | CP3PA09901C0 | PP2BP09901C0 | PA | C | P2 | PK | PA | 099 | 01 | PB | N | BILL 2 | B02 | S1 | 01 | R00 | ACF06 | PB-1 | 099 |  |  |  |
| PP2BP21114C10 |  | PA-P2 ; 1st Fix, Fire Fighting system (Parking Area)_PB-1 | 36d | 2012-03-18 | 2012-04-29 | PP2BP09901C10, PP3BP21114C10 | 25.5d | 0d | MECHANICAL [201.6 h]; Cost |  |  | CP3PA21109C0 | PP2BP21114C0 | PA | C | P2 | PK | ME | 211 | 14 | PB | N | BILL 2 | B02 | S1 | 1F | R00 | ACF04 | PB-1 | 211 | 1S | MEP | M1F |
| PP2BP21124C10 |  | PA-P2 ; 2nd Fix, Fire Fighting system (Parking Area)_PB-1 | 36d | 2012-04-29 | 2012-06-10 | PP2BP21114C10 | 153.62d | 80d | MECHANICAL [283.2 h]; Cost |  |  | CP3PA21115C0 | PP2BP21124C0 | PA | C | P2 | PK | ME | 211 | 24 | PB | N | BILL 2 | B02 | S1 | 2F | R00 | ACF07 | PB-1 | 211 | 2n | MEP |  |
| PP2BP22015C10 |  | PA-P2 ; 1st Fix, Plumbing / Drainage System (Parking Area)_PB-1 | 36d | 2012-04-29 | 2012-06-10 | PP2BP21114C10 SS, PP2BP09901C10, PP2BP21114C10 | 57.62d | 0d | PLUMBING [538.8 h]; Cost |  |  | CP3PA22001C0 | PP2BP22015C0 | PA | C | P2 | PK | ME | 220 | 15 | PB | N | BILL 2 | B02 | S1 | 1F | R00 | ACF04 | PB-1 | 220 | 1S | MEP | M1F |
| PP2BP22025C10 |  | PA-P2 ; 2nd Fix, Plumbing / Drainage System (Parking Area)_PB-1 | 36d | 2012-06-10 | 2012-07-23 | PP2BP22015C10 | 129.62d | 56d | PLUMBING [666 h]; Cost |  |  | CP3PA22011C0 | PP2BP22025C0 | PA | C | P2 | PK | ME | 220 | 25 | PB | N | BILL 2 | B02 | S1 | 2F | R00 | ACF07 | PB-1 | 220 | 2n | MEP |  |
| PP2BP23011C10 |  | PA-P2 ; 1st Fix, CHW / HVAC System (Parking Area)_PB-1 | 36d | 2012-06-10 | 2012-07-23 | PP2BP22015C10 SS, PP2BP09901C10, PP2BP22015C10 | 57.62d | 0d | MECHANICAL [1394.4 h]; Cost |  |  | CP3PA23001C0 | PP2BP23011C0 | PA | C | P2 | PK | ME | 230 | 11 | PB | N | BILL 2 | B02 | S1 | 1F | R00 | ACF04 | PB-1 | 230 | 1S | MEP | M1F |
| PP2BP23021C10 |  | PA-P2 ; 2nd Fix, CHW / HVAC System (Parking Area)_PB-1 | 36d | 2012-07-23 | 2012-09-05 | PP2BP23011C10 | 73.62d | 0d | MECHANICAL [1394.4 h]; Cost |  |  | CP3PA23011C0 | PP2BP23021C0 | PA | C | P2 | PK | ME | 230 | 21 | PB | N | BILL 2 | B02 | S1 | 2F | R00 | ACF07 | PB-1 | 230 | 2n | MEP |  |
| PP2BP26012C10 |  | PA-P2 ; 1st Fix, Electrical System (Parking Area)_PB-1 | 36d | 2012-07-23 | 2012-09-05 | PP2BP21114C10 SS, PP2BP09901C10, PP2BP23011C10 | 57.62d | 0d | ELECTRICAL [1297.2 h]; Cost |  |  | CP3PA26001C0 | PP2BP26012C0 | PA | C | P2 | PK | ME | 260 | 12 | PB | N | BILL 2 | B02 | S1 | 1F | R00 | ACF04 | PB-1 | 260 | 1S | MEP | M1F |
| PP2BP09902C10 |  | PA-P2 ; 2nd coat (Wall & Ceiling) (Parking Area)_PB-1 | 8d | 2012-09-05 | 2012-09-15 | PP2BP09901C10, PGLS103331C360, PGLS103331C370, PGLS103331C350, PGLS103331C340, PGLS103331C330, PGLS103391C220, PP2BP23021C10 | 73.62d | 0d | CEILING PAINT [814 h]; WALL PAINT [177 h]; CEILING PAINT [1016.25 m2]; WALL PAINT [219.5 m2]; Cost | 329 | 957 | CP3PA09903C0 | PP2BP09902C0 | PA | C | P2 | PK | PA | 099 | 02 | PB | N | BILL 2 | B02 | S1 | 02 | R00 | ACF06 | PB-1 | 099 |  |  |  |
| PP2BP26022C10 |  | PA-P2 ; 2nd Fix, Electrical System (Parking Area)_PB-1 | 36d | 2012-09-05 | 2012-10-17 | PP2BP26012C10 | 81.62d | 8d | ELECTRICAL [1297.2 h]; Cost |  |  | CP3PA26005C0 | PP2BP26022C0 | PA | C | P2 | PK | ME | 260 | 22 | PB | N | BILL 2 | B02 | S1 | 2F | R00 | ACF07 | PB-1 | 260 | 2n | MEP |  |
| PP2BP27013C10 |  | PA-P2 ; 1st Fix, ELV system (Parking Area)_PB-1 | 36d | 2012-09-05 | 2012-10-17 | PP2BP26012C10 SS, PP2BP09901C10, PP2BP26012C10 | 57.62d | 0d | ELECTRICAL [268.8 h]; Cost |  |  | CP3PA27010C0 | PP2BP27013C0 | PA | C | P2 | PK | ME | 270 | 13 | PB | N | BILL 2 | B02 | S1 | 1F | R00 | ACF04 | PB-1 | 270 | 1S | MEP | M1F |
| PP2BP21113C10 |  | PA-P2 ; Final Fix, Fire Fighting system (Parking Area)_PB-1 | 12d | 2012-09-15 | 2012-09-29 | PP2BP09902C10, PP2BP21124C10, PGLS103331C360, PGLS103331C370, PGLS103331C350, PGLS103331C340, PGLS103331C330, PGLS103391C220, PP2BE09502C0 SS | 73.62d | 0d | MECHANICAL [201.6 h]; Cost |  |  | CP3PA21113C0 | PP2BP21113C0 | PA | C | P2 | PK | ME | 211 | 13 | PB | N | BILL 2 | B02 | S1 | FF | R00 | ACF07 | PB-1 | 211 | FF | MEP |  |
| PP2BP22011C10 |  | PA-P2 ; Final Fix, Drainage System (Parking Area)_PB-1 | 12d | 2012-09-29 | 2012-10-13 | PP2BP09902C10, PP2BP22025C10, PGLS103331C360, PGLS103331C370, PGLS103331C350, PGLS103331C340, PGLS103331C330, PGLS103391C220, PP2BE09502C0 SS, PP2BP21113C10 | 73.62d | 0d | PLUMBING [538.8 h]; Cost |  |  | CP3PA22011C0 | PP2BP22011C0 | PA | C | P2 | PK | ME | 220 | 11 | PB | N | BILL 2 | B02 | S1 | FF | R00 | ACF07 | PB-1 | 220 | FF | MEP |  |
| PP2BP23019C10 |  | PA-P2 ; Final Fix, CHW / HVAC System (Parking Area)_PB-1 | 12d | 2012-10-13 | 2012-10-29 | PP2BP09902C10, PP2BP23021C10, PGLS103331C360, PGLS103331C370, PGLS103331C350, PGLS103331C340, PGLS103331C330, PGLS103391C220, PP2BE09502C0 SS, PP2BP22011C10 | 73.62d | 0d | MECHANICAL [1394.4 h]; Cost |  |  | CP3PA23019C0 | PP2BP23019C0 | PA | C | P2 | PK | ME | 230 | 19 | PB | N | BILL 2 | B02 | S1 | FF | R00 | ACF07 | PB-1 | 230 | FF | MEP |  |
| PP2BP27023C10 |  | PA-P2 ; 2nd Fix, ELV system (Parking Area)_PB-1 | 36d | 2012-10-17 | 2012-12-02 | PP2BP27013C10 | 57.62d | 0d | ELECTRICAL [211.2 h]; Cost |  |  | CP3PA27020C0 | PP2BP27023C0 | PA | C | P2 | PK | ME | 270 | 23 | PB | N | BILL 2 | B02 | S1 | 2F | R00 | ACF07 | PB-1 | 270 | 2n | MEP |  |
| PP2BP26017C10 |  | PA-P2 ; Final Fix, Electrical System (Parking Area)_PB-1 | 12d | 2012-10-29 | 2012-11-12 | PP2BP09902C10, PP2BP26022C10, PGLS103331C360, PGLS103331C370, PGLS103331C350, PGLS103331C340, PGLS103331C330, PGLS103391C220, PP2BE09502C0 SS, PP2BP23019C10 | 73.62d | 16d | ELECTRICAL [1674 h]; Cost |  |  | CP3PA26017C0 | PP2BP26017C0 | PA | C | P2 | PK | ME | 260 | 17 | PB | N | BILL 2 | B02 | S1 | FF | R00 | ACF07 | PB-1 | 260 | FF | MEP |  |
| PP2BP27030C10 |  | PA-P2 ; Final Fix, ELV system (Parking Area)_PB-1 | 12d | 2012-12-02 | 2012-12-17 | PP2BP09902C10, PP2BP27023C10, PP2BP27023C10 FF, PGLS103331C360, PGLS103331C370, PGLS103331C350, PGLS103331C340, PGLS103331C330, PGLS103391C220, PP2BE09502C0 SS, PP2BP26017C10 | 57.62d | 0d | ELECTRICAL [268.8 h]; Cost |  |  | CP3PA27030C0 | PP2BP27030C0 | PA | C | P2 | PK | ME | 270 | 30 | PB | N | BILL 2 | B02 | S1 | FF | R00 | ACF07 | PB-1 | 270 | FF | MEP |  |
| PP2BP09903C10 |  | PA-P2 ; Concrete Sealer (Floor) (Parking Area)_PB-1 | 6d | 2012-12-17 | 2012-12-24 | PP2BP21113C10, PP2BP22011C10, PP2BP23019C10, PP2BP26017C10, PP2BP27030C10, PGLS103331C360, PGLS103331C370, PGLS103331C350, PGLS103331C340, PGLS103331C330, PGLS103391C220, PP2BE09502C0 SS | 57.62d | 0d | ASSORTED FLOOR FINISH [2544 h]; ASSORTED FLOOR FINISH [1411 m2]; Cost |  |  | AP2PK09903C0 | PP2BP09903C0 | PA | C | P2 | PK | FF | 096 | 03 | PB | N | BILL 2 | B02 | S1 | 05 | R00 | ACF06 | PB-1 | CS |  |  |  |
| PP2BP05509C10 |  | PA-P2 ; Grill & Louvers (Parking Area)_PB-1 | 3.84d | 2012-12-24 | 2012-12-29 | PP2BP09903C10, PGLS103331C360, PGLS103331C370, PGLS103331C350, PGLS103331C340, PGLS103331C330, PGLS103391C220, PP2BE09502C0 SS | 70.78d | 51.54d | SECONDARY STEEL [196 h]; Cost | 328 | 956 | CP3PA09901C0 | PP3AP09901C0 | PA | C | P2 | PK | SW | 055 | 01 | PB | N | BILL 2 | B02 | S1 | 02 | R00 | ACF03 | PB-1 | 056 |  |  |  |
| PP2BP11006C10 |  | PA-P2 ; Wall Protection (WP, CG, WG, FCG) (Parking Area)_PB-1 | 6d | 2012-12-24 | 2012-12-31 | PP2BP09903C10, PGLS103331C360, PGLS103331C370, PGLS103331C350, PGLS103331C340, PGLS103331C330, PGLS103391C220, PP2BE09502C0 SS | 57.62d | 0d | FF&E [49 h]; Cost | 326 | 1001 | CP3PA11001C0 | PP2BP11006C0 | PA | C | P2 | PK | WF | 097 | 06 | PB | N | BILL 2 | B02 | S1 | 03 | R00 | ACF08 | PB-1 | 097 |  |  |  |
| PP2BP11004C10 |  | PA-P2 ; Floor Marking & Signage (Parking Area)_PB-1 | 6d | 2012-12-31 | 2013-01-08 | PP2BP09903C10, PP2BP11006C10, PGLS103331C360, PGLS103331C370, PGLS103331C350, PGLS103331C340, PGLS103331C330, PGLS103391C220, PP2BE09502C0 SS | 57.62d | 0d | SIGNAGES [588 h]; SIGNAGES [81.75 no]; Cost |  |  | AP2PK11004C0 | PP2BP11004C0 | PA | C | P2 | PK | SA | 110 | 04 | PB | N | BILL 2 | B02 | S1 | 09 | R00 | ACF08 | PB-1 | c |  |  |  |
| PP2BP11009C10 |  | PA-P2 ; FF&E (Parking Area)_PB-1 | 5d | 2013-01-08 | 2013-01-14 | PP2BP11004C10, PGLS103331C360, PGLS103331C370, PGLS103331C350, PGLS103331C340, PGLS103331C330, PGLS103391C220, PP2BE09502C0 SS | 57.62d | 38.39d | FF&E [258 h]; Cost |  |  | AP3PK11004C0 | PP3BP11004C0 | PA | C | P2 | PK | SA | 110 | 04 | PB | N | BILL 2 | B02 | S1 | 01 | R00 | ACF08 | PB-1 | a |  |  |  |
|  | BP2 | **PARKING AREA : Zone PB-2** |  | 2012-06-20 | 2013-01-26 |  |  |  |  |  |  |  |  |  |  |  |  |  |  |  |  |  |  |  |  |  |  |  |  |  |  |  |  |
| PP2BP09901C20 |  | PA-P2 ; Prime & 1st coat (Wall & Ceiling) (Parking Area)_PB-2 | 18d | 2012-06-20 | 2012-07-11 | PGLS103391C160 SS, PGLS703394R02 SS, PGLS703394C0 SS, PGLS103391C140 SS, PGLS103391C260 SS, PGLS103392R02 SS, PGLS103391C170 SS, PGLS103394R02 SS, PGLS103391C190 SS | 48.36d | 0d | CEILING PAINT [2420 h]; WALL PAINT [523 h]; CEILING PAINT [3020 m2]; WALL PAINT [652.4 m2]; Cost | 328 | 956 | CP3PA09901C0 | PP2BP09901C0 | PA | C | P2 | PK | PA | 099 | 01 | PB | N | BILL 2 | B02 | S1 | 01 | R00 | ACF06 | PB-2 | 099 |  |  |  |
| PP2BP21114C20 |  | PA-P2 ; 1st Fix, Fire Fighting system (Parking Area)_PB-2 | 18d | 2012-07-11 | 2012-08-01 | PP2BP09901C20 | 48.36d | 0d | MECHANICAL [321.6 h]; Cost |  |  | CP3PA21109C0 | PP2BP21114C0 | PA | C | P2 | PK | ME | 211 | 14 | PB | N | BILL 2 | B02 | S1 | 1F | R00 | ACF04 | PB-2 | 211 | 1S | MEP | M1F |
| PP2BP21124C20 |  | PA-P2 ; 2nd Fix, Fire Fighting system (Parking Area)_PB-2 | 30d | 2012-08-01 | 2012-09-08 | PP2BP21114C20 | 60.36d | 0d | MECHANICAL [452.4 h]; Cost |  |  | CP3PA21115C0 | PP2BP21124C0 | PA | C | P2 | PK | ME | 211 | 24 | PB | N | BILL 2 | B02 | S1 | 2F | R00 | ACF07 | PB-2 | 211 | 2n | MEP |  |
| PP2BP22015C20 |  | PA-P2 ; 1st Fix, Plumbing / Drainage System (Parking Area)_PB-2 | 18d | 2012-08-01 | 2012-08-25 | PP2BP21114C20 SS, PP2BP09901C20, PP2BP21114C20 | 48.36d | 0d | PLUMBING [862.8 h]; Cost |  |  | CP3PA22001C0 | PP2BP22015C0 | PA | C | P2 | PK | ME | 220 | 15 | PB | N | BILL 2 | B02 | S1 | 1F | R00 | ACF04 | PB-2 | 220 | 1S | MEP | M1F |
| PP2BP22025C20 |  | PA-P2 ; 2nd Fix, Plumbing / Drainage System (Parking Area)_PB-2 | 30d | 2012-08-25 | 2012-09-29 | PP2BP22015C20 | 66.36d | 6d | PLUMBING [1065.6 h]; Cost |  |  | CP3PA22011C0 | PP2BP22025C0 | PA | C | P2 | PK | ME | 220 | 25 | PB | N | BILL 2 | B02 | S1 | 2F | R00 | ACF07 | PB-2 | 220 | 2n | MEP |  |
| PP2BP23011C20 |  | PA-P2 ; 1st Fix, CHW / HVAC System (Parking Area)_PB-2 | 18d | 2012-08-25 | 2012-09-15 | PP2BP22015C20 SS, PP2GN03300R02 FF, PP2BP09901C20, PP2BP22015C20 | 48.36d | 0d | MECHANICAL [2230.8 h]; Cost |  |  | CP3PA23001C0 | PP2BP23011C0 | PA | C | P2 | PK | ME | 230 | 11 | PB | N | BILL 2 | B02 | S1 | 1F | R00 | ACF04 | PB-2 | 230 | 1S | MEP | M1F |
| PP2BP09902C20 |  | PA-P2 ; 2nd coat (Wall & Ceiling) (Parking Area)_PB-2 | 12d | 2012-09-08 | 2012-09-22 | PP2BP09901C20, PGLS103331C410, PGLS103331C420, PGLS103331C380, PGLS103331C390, PGLS103331C400, PGLS703394C10, PGLS703394C20, PGLS103391C240, PGLS103391C230, PGLS103371C250, PGLS103391C210, PP2BP21124C20 | 60.36d | 0d | CEILING PAINT [1303 h]; WALL PAINT [282 h]; CEILING PAINT [1626 m2]; WALL PAINT [351.2 m2]; Cost | 329 | 957 | CP3PA09903C0 | PP2BP09902C0 | PA | C | P2 | PK | PA | 099 | 02 | PB | N | BILL 2 | B02 | S1 | 02 | R00 | ACF06 | PB-2 | 099 |  |  |  |
| PP2BP23021C20 |  | PA-P2 ; 2nd Fix, CHW / HVAC System (Parking Area)_PB-2 | 30d | 2012-09-15 | 2012-10-20 | PP2BP23011C20 | 60.36d | 0d | MECHANICAL [2230.8 h]; Cost |  |  | CP3PA23011C0 | PP2BP23021C0 | PA | C | P2 | PK | ME | 230 | 21 | PB | N | BILL 2 | B02 | S1 | 2F | R00 | ACF07 | PB-2 | 230 | 2n | MEP |  |
| PP2BP26012C20 |  | PA-P2 ; 1st Fix, Electrical System (Parking Area)_PB-2 | 18d | 2012-09-15 | 2012-10-06 | PP2BP21114C20 SS, PP2BP09901C20, PP2BP23011C20 | 48.36d | 0d | ELECTRICAL [2074.8 h]; Cost |  |  | CP3PA26001C0 | PP2BP26012C0 | PA | C | P2 | PK | ME | 260 | 12 | PB | N | BILL 2 | B02 | S1 | 1F | R00 | ACF04 | PB-2 | 260 | 1S | MEP | M1F |
| PP2BP21113C20 |  | PA-P2 ; Final Fix, Fire Fighting system (Parking Area)_PB-2 | 12d | 2012-09-22 | 2012-10-06 | PP2BP09902C20, PP2BP21124C20, PGLS103331C410, PGLS103331C420, PGLS103331C380, PGLS103331C390, PGLS103331C400, PGLS703394C10, PGLS703394C20, PGLS103391C240, PGLS103391C230, PGLS103371C250, PGLS103391C210 | 60.36d | 0d | MECHANICAL [321.6 h]; Cost |  |  | CP3PA21113C0 | PP2BP21113C0 | PA | C | P2 | PK | ME | 211 | 13 | PB | N | BILL 2 | B02 | S1 | FF | R00 | ACF07 | PB-2 | 211 | FF | MEP |  |
| PP2BP22011C20 |  | PA-P2 ; Final Fix, Drainage System (Parking Area)_PB-2 | 12d | 2012-10-06 | 2012-10-20 | PP2BP09902C20, PP2BP22025C20, PGLS103331C410, PGLS103331C420, PGLS103331C380, PGLS103331C390, PGLS103331C400, PGLS703394C10, PGLS703394C20, PGLS103391C240, PGLS103391C230, PGLS103371C250, PGLS103391C210, PP2BP21113C20 | 60.36d | 0d | PLUMBING [862.8 h]; Cost |  |  | CP3PA22011C0 | PP2BP22011C0 | PA | C | P2 | PK | ME | 220 | 11 | PB | N | BILL 2 | B02 | S1 | FF | R00 | ACF07 | PB-2 | 220 | FF | MEP |  |
| PP2BP26022C20 |  | PA-P2 ; 2nd Fix, Electrical System (Parking Area)_PB-2 | 30d | 2012-10-06 | 2012-11-12 | PP2BP26012C20 | 54.36d | 0d | ELECTRICAL [2074.8 h]; Cost |  |  | CP3PA26005C0 | PP2BP26022C0 | PA | C | P2 | PK | ME | 260 | 22 | PB | N | BILL 2 | B02 | S1 | 2F | R00 | ACF07 | PB-2 | 260 | 2n | MEP |  |
| PP2BP27013C20 |  | PA-P2 ; 1st Fix, ELV system (Parking Area)_PB-2 | 18d | 2012-10-06 | 2012-10-29 | PP2BP26012C20 SS, PP2BP09901C20, PP2BP26012C20 | 48.36d | 0d | ELECTRICAL [429.6 h]; Cost |  |  | CP3PA27010C0 | PP2BP27013C0 | PA | C | P2 | PK | ME | 270 | 13 | PB | N | BILL 2 | B02 | S1 | 1F | R00 | ACF04 | PB-2 | 270 | 1S | MEP | M1F |
| PP2BP23019C20 |  | PA-P2 ; Final Fix, CHW / HVAC System (Parking Area)_PB-2 | 12d | 2012-10-20 | 2012-11-05 | PP2BP09902C20, PP2BP23021C20, PGLS103331C410, PGLS103331C420, PGLS103331C380, PGLS103331C390, PGLS103331C400, PGLS703394C10, PGLS703394C20, PGLS103391C240, PGLS103391C230, PGLS103371C250, PGLS103391C210, PP2BP22011C20 | 60.36d | 6d | MECHANICAL [2230.8 h]; Cost |  |  | CP3PA23019C0 | PP2BP23019C0 | PA | C | P2 | PK | ME | 230 | 19 | PB | N | BILL 2 | B02 | S1 | FF | R00 | ACF07 | PB-2 | 230 | FF | MEP |  |
| PP2BP27023C20 |  | PA-P2 ; 2nd Fix, ELV system (Parking Area)_PB-2 | 30d | 2012-10-29 | 2012-12-05 | PP2BP27013C20 | 48.36d | 0d | ELECTRICAL [337.2 h]; Cost |  |  | CP3PA27020C0 | PP2BP27023C0 | PA | C | P2 | PK | ME | 270 | 23 | PB | N | BILL 2 | B02 | S1 | 2F | R00 | ACF07 | PB-2 | 270 | 2n | MEP |  |
| PP2BP26017C20 |  | PA-P2 ; Final Fix, Electrical System (Parking Area)_PB-2 | 12d | 2012-11-12 | 2012-11-27 | PP2BP09902C20, PP2BP26022C20, LAFGN26001R02 FF, PGLS103331C410, PGLS103331C420, PGLS103331C380, PGLS103331C390, PGLS103331C400, PGLS703394C10, PGLS703394C20, PGLS103391C240, PGLS103391C230, PGLS103371C250, PGLS103391C210, PP2BP23019C20 | 54.36d | 6d | ELECTRICAL [2678.4 h]; Cost |  |  | CP3PA26017C0 | PP2BP26017C0 | PA | C | P2 | PK | ME | 260 | 17 | PB | N | BILL 2 | B02 | S1 | FF | R00 | ACF07 | PB-2 | 260 | FF | MEP |  |
| PP2BP27030C20 |  | PA-P2 ; Final Fix, ELV system (Parking Area)_PB-2 | 12d | 2012-12-05 | 2012-12-19 | PP2BP09902C20, PP2BP27023C20, PP2BP27023C20 FF, PGLS103331C410, PGLS103331C420, PGLS103331C380, PGLS103331C390, PGLS103331C400, PGLS703394C10, PGLS703394C20, PGLS103391C240, PGLS103391C230, PGLS103371C250, PGLS103391C210, PP2BP26017C20 | 48.36d | 0d | ELECTRICAL [429.6 h]; Cost |  |  | CP3PA27030C0 | PP2BP27030C0 | PA | C | P2 | PK | ME | 270 | 30 | PB | N | BILL 2 | B02 | S1 | FF | R00 | ACF07 | PB-2 | 270 | FF | MEP |  |
| PP2BP09903C20 |  | PA-P2 ; Concrete Sealer (Floor) (Parking Area)_PB-2 | 10d | 2012-12-19 | 2012-12-31 | PP2BP21113C20, PP2BP22011C20, PP2BP23019C20, PP2BP26017C20, PP2BP27030C20, PGLS103331C410, PGLS103331C420, PGLS103331C380, PGLS103331C390, PGLS103331C400, PGLS703394C10, PGLS703394C20, PGLS103391C240, PGLS103391C230, PGLS103371C250, PGLS103391C210 | 48.36d | 0d | ASSORTED FLOOR FINISH [4064 h]; ASSORTED FLOOR FINISH [2257.6 m2]; Cost |  |  | AP2PK09903C0 | PP2BP09903C0 | PA | C | P2 | PK | FF | 096 | 03 | PB | N | BILL 2 | B02 | S1 | 05 | R00 | ACF06 | PB-2 | CS |  |  |  |
| PP2BP05509C20 |  | PA-P2 ; Grill & Louvers (Parking Area)_PB-2 | 5.65d | 2012-12-31 | 2013-01-08 | PP2BP09903C20, PGLS103331C410, PGLS103331C420, PGLS103331C380, PGLS103331C390, PGLS103331C400, PGLS703394C10, PGLS703394C20, PGLS103391C240, PGLS103391C230, PGLS103371C250, PGLS103391C210 | 62.59d | 43.35d | SECONDARY STEEL [313 h]; Cost | 328 | 956 | CP3PA09901C0 | PP3AP09901C0 | PA | C | P2 | PK | SW | 055 | 01 | PB | N | BILL 2 | B02 | S1 | 02 | R00 | ACF03 | PB-2 | 056 |  |  |  |
| PP2BP11006C20 |  | PA-P2 ; Wall Protection (WP, CG, WG, FCG) (Parking Area)_PB-2 | 6d | 2012-12-31 | 2013-01-08 | PP2BP09903C20, PGLS103331C410, PGLS103331C420, PGLS103331C380, PGLS103331C390, PGLS103331C400, PGLS703394C10, PGLS703394C20, PGLS103391C240, PGLS103391C230, PGLS103371C250, PGLS103391C210 | 48.36d | 0d | FF&E [79 h]; Cost | 326 | 1001 | CP3PA11001C0 | PP2BP11006C0 | PA | C | P2 | PK | WF | 097 | 06 | PB | N | BILL 2 | B02 | S1 | 03 | R00 | ACF08 | PB-2 | 097 |  |  |  |
| PP2BP11004C20 |  | PA-P2 ; Floor Marking & Signage (Parking Area)_PB-2 | 9d | 2013-01-08 | 2013-01-19 | PP2BP09903C20, PP2BP11006C20, PGLS103331C410, PGLS103331C420, PGLS103331C380, PGLS103331C390, PGLS103331C400, PGLS703394C10, PGLS703394C20, PGLS103391C240, PGLS103391C230, PGLS103371C250, PGLS103391C210 | 48.36d | 0d | SIGNAGES [941 h]; SIGNAGES [130.8 no]; Cost |  |  | AP2PK11004C0 | PP2BP11004C0 | PA | C | P2 | PK | SA | 110 | 04 | PB | N | BILL 2 | B02 | S1 | 09 | R00 | ACF08 | PB-2 | c |  |  |  |
| PP2BP11009C20 |  | PA-P2 ; FF&E (Parking Area)_PB-2 | 4.88d | 2013-01-19 | 2013-01-26 | PP2BP11004C20, PGLS103331C410, PGLS103331C420, PGLS103331C380, PGLS103331C390, PGLS103331C400, PGLS703394C10, PGLS703394C20, PGLS103391C240, PGLS103391C230, PGLS103371C250, PGLS103391C210, PV10AF08107R2 FF | 48.36d | 29.12d | FF&E [412 h]; Cost |  |  | AP3PK11004C0 | PP3BP11004C0 | PA | C | P2 | PK | SA | 110 | 04 | PB | N | BILL 2 | B02 | S1 | 01 | R00 | ACF08 | PB-2 | a |  |  |  |

| ID | WBS | Activity | Duration | Start | Finish | Predecessors | Complete | Remaining | Planned start | Planned finish | Total float | Free float | Resources | Change Order # | NEW ACTIVITY ID | change id | IDDD | CCAD BUILDING(SET) | CCAD PHASE(SET) | CCAD FLOOR(SET) | CCAD ZONE(SET) | CCAD WORK(SET) | CCAD SECTION(SET) | CCAD SERIAL No.(SET) | CCAD Carpark code(SET) | CCAD Carpark district code(set) | CCAD CBS(SET) | CCAD BILL(SET) | CCAD HANDOVER(SET) | CCAD TAG(SET) | CCAD REV(SET) | CCADACF (SET) | FSP CODE | CCAD SSCF | CCAD SUB ZONE MEP(SET) | CCAD CSA | Act Selector % | CCAD DIVISION(SET) | CCAD MEQ |
| --- | --- | --- | --- | --- | --- | --- | --- | --- | --- | --- | --- | --- | --- | --- | --- | --- | --- | --- | --- | --- | --- | --- | --- | --- | --- | --- | --- | --- | --- | --- | --- | --- | --- | --- | --- | --- | --- | --- | --- |
|  | BP3 | **PARKING AREA : Zone PB-3** |  | 2012-01-16 | 2012-12-31 |  |  |  |  |  |  |  |  |  |  |  |  |  |  |  |  |  |  |  |  |  |  |  |  |  |  |  |  |  |  |  |  |  |  |
| PP2BP09901C30 |  | PA-P2 ; Prime & 1st coat (Wall & Ceiling) (Parking Area)_PB-3 | 18d | 2012-01-16 | 2012-02-07 | PGLS103391C180 SS, PGLS103391C200 SS, PP3BP09901C30 |  |  |  |  | 55.88d | 0d | CEILING PAINT [2117 h]; WALL PAINT [459 h]; CEILING PAINT [2642.5 m2]; WALL PAINT [570.85 m2]; Cost | 328 | 956 | CP3PA09901C0 | PP2BP09901C0 | PA | C | P2 | PK | PA | 099 | 01 | PB | N | BILL 2 | B02 | S1 | 01 | R00 | ACF06 | PB-3 | 099 |  |  |  |  |  |
| PP2BP21114C30 |  | PA-P2 ; 1st Fix, Fire Fighting system (Parking Area)_PB-3 | 36d | 2012-02-28 | 2012-04-10 | PP2BP09901C30, PP3BP21114C30 |  |  |  |  | 37.88d | 0d | MECHANICAL [282 h]; Cost |  |  | CP3PA21109C0 | PP2BP21114C0 | PA | C | P2 | PK | ME | 211 | 14 | PB | N | BILL 2 | B02 | S1 | 1F | R00 | ACF04 | PB-3 | 211 | 1S | MEP | M1F |  |  |
| PP2BP21124C30 |  | PA-P2 ; 2nd Fix, Fire Fighting system (Parking Area)_PB-3 | 36d | 2012-04-10 | 2012-05-22 | PP2BP21114C30 |  |  |  |  | 164.88d | 80.88d | MECHANICAL [396 h]; Cost |  |  | CP3PA21115C0 | PP2BP21124C0 | PA | C | P2 | PK | ME | 211 | 24 | PB | N | BILL 2 | B02 | S1 | 2F | R00 | ACF07 | PB-3 | 211 | 2n | MEP |  |  |  |
| PP2BP22015C30 |  | PA-P2 ; 1st Fix, Plumbing / Drainage System (Parking Area)_PB-3 | 36d | 2012-04-10 | 2012-05-22 | PP2BP21114C30 SS, PP2BP09901C30, PP2BP21114C30 |  |  |  |  | 68.88d | 0d | PLUMBING [754.8 h]; Cost |  |  | CP3PA22001C0 | PP2BP22015C0 | PA | C | P2 | PK | ME | 220 | 15 | PB | N | BILL 2 | B02 | S1 | 1F | R00 | ACF04 | PB-3 | 220 | 1S | MEP | M1F |  |  |
| PP2BP22025C30 |  | PA-P2 ; 2nd Fix, Plumbing / Drainage System (Parking Area)_PB-3 | 36d | 2012-05-22 | 2012-07-04 | PP2BP22015C30 |  |  |  |  | 140.88d | 56.88d | PLUMBING [932.4 h]; Cost |  |  | CP3PA22011C0 | PP2BP22025C0 | PA | C | P2 | PK | ME | 220 | 25 | PB | N | BILL 2 | B02 | S1 | 2F | R00 | ACF07 | PB-3 | 220 | 2n | MEP |  |  |  |
| PP2BP23011C30 |  | PA-P2 ; 1st Fix, CHW / HVAC System (Parking Area)_PB-3 | 36d | 2012-05-22 | 2012-07-04 | PP2BP22015C30 SS, PP2BP09901C30, PP2BP22015C30 |  |  |  |  | 68.88d | 0d | MECHANICAL [1951.2 h]; Cost |  |  | CP3PA23001C0 | PP2BP23011C0 | PA | C | P2 | PK | ME | 230 | 11 | PB | N | BILL 2 | B02 | S1 | 1F | R00 | ACF04 | PB-3 | 230 | 1S | MEP | M1F |  |  |
| PP2BP23021C30 |  | PA-P2 ; 2nd Fix, CHW / HVAC System (Parking Area)_PB-3 | 36d | 2012-07-04 | 2012-08-15 | PP2BP23011C30 |  |  |  |  | 84d | 0d | MECHANICAL [1951.2 h]; Cost |  |  | CP3PA23011C0 | PP2BP23021C0 | PA | C | P2 | PK | ME | 230 | 21 | PB | N | BILL 2 | B02 | S1 | 2F | R00 | ACF07 | PB-3 | 230 | 2n | MEP |  |  |  |
| PP2BP26012C30 |  | PA-P2 ; 1st Fix, Electrical System (Parking Area)_PB-3 | 36d | 2012-07-04 | 2012-08-15 | PP2BP21114C30 SS, PP2BP09901C30, PP2BP23011C30 |  |  |  |  | 68.88d | 0d | ELECTRICAL [1815.6 h]; Cost |  |  | CP3PA26001C0 | PP2BP26012C0 | PA | C | P2 | PK | ME | 260 | 12 | PB | N | BILL 2 | B02 | S1 | 1F | R00 | ACF04 | PB-3 | 260 | 1S | MEP | M1F |  |  |
| PP2BP09902C30 |  | PA-P2 ; 2nd coat (Wall & Ceiling) (Parking Area)_PB-3 | 8.88d | 2012-08-15 | 2012-08-27 | PP2BP09901C30, PGLS103331C360, PGLS103331C370, PGLS103331C350, PGLS103331C340, PGLS103331C330, PGLS103391C220, PP2BP23021C30 |  |  |  |  | 84d | 0d | CEILING PAINT [1141 h]; WALL PAINT [247 h]; CEILING PAINT [1422.75 m2]; WALL PAINT [307.3 m2]; Cost | 329 | 957 | CP3PA09903C0 | PP2BP09902C0 | PA | C | P2 | PK | PA | 099 | 02 | PB | N | BILL 2 | B02 | S1 | 02 | R00 | ACF06 | PB-3 | 099 |  |  |  |  |  |
| PP2BP26022C30 |  | PA-P2 ; 2nd Fix, Electrical System (Parking Area)_PB-3 | 36d | 2012-08-15 | 2012-09-29 | PP2BP26012C30 |  |  |  |  | 92.88d | 8.88d | ELECTRICAL [1815.6 h]; Cost |  |  | CP3PA26005C0 | PP2BP26022C0 | PA | C | P2 | PK | ME | 260 | 22 | PB | N | BILL 2 | B02 | S1 | 2F | R00 | ACF07 | PB-3 | 260 | 2n | MEP |  |  |  |
| PP2BP27013C30 |  | PA-P2 ; 1st Fix, ELV system (Parking Area)_PB-3 | 36d | 2012-08-15 | 2012-09-29 | PP2BP26012C30 SS, PP2BP09901C30, PP2BP26012C30 |  |  |  |  | 68.88d | 0d | ELECTRICAL [375.6 h]; Cost |  |  | CP3PA27010C0 | PP2BP27013C0 | PA | C | P2 | PK | ME | 270 | 13 | PB | N | BILL 2 | B02 | S1 | 1F | R00 | ACF04 | PB-3 | 270 | 1S | MEP | M1F |  |  |
| PP2BP21113C30 |  | PA-P2 ; Final Fix, Fire Fighting system (Parking Area)_PB-3 | 12d | 2012-08-28 | 2012-09-10 | PP2BP09902C30, PP2BP21124C30, PGLS103331C360, PGLS103331C370, PGLS103331C350, PGLS103331C340, PGLS103331C330, PGLS103391C220, PP2BE09502C0 SS |  |  |  |  | 84d | 0d | MECHANICAL [282 h]; Cost |  |  | CP3PA21113C0 | PP2BP21113C0 | PA | C | P2 | PK | ME | 211 | 13 | PB | N | BILL 2 | B02 | S1 | FF | R00 | ACF07 | PB-3 | 211 | FF | MEP |  |  |  |
| PP2BP22011C30 |  | PA-P2 ; Final Fix, Drainage System (Parking Area)_PB-3 | 12d | 2012-09-11 | 2012-09-24 | PP2BP09902C30, PP2BP22025C30, PGLS103331C360, PGLS103331C370, PGLS103331C350, PGLS103331C340, PGLS103331C330, PGLS103391C220, PP2BE09502C0 SS, PP2BP21113C30 |  |  |  |  | 84d | 0d | PLUMBING [754.8 h]; Cost |  |  | CP3PA22011C0 | PP2BP22011C0 | PA | C | P2 | PK | ME | 220 | 11 | PB | N | BILL 2 | B02 | S1 | FF | R00 | ACF07 | PB-3 | 220 | FF | MEP |  |  |  |
| PP2BP23019C30 |  | PA-P2 ; Final Fix, CHW / HVAC System (Parking Area)_PB-3 | 12d | 2012-09-25 | 2012-10-08 | PP2BP09902C30, PP2BP23021C30, PGLS103331C360, PGLS103331C370, PGLS103331C350, PGLS103331C340, PGLS103331C330, PGLS103391C220, PP2BE09502C0 SS, PP2BP22011C30 |  |  |  |  | 84d | 0d | MECHANICAL [1951.2 h]; Cost |  |  | CP3PA23019C0 | PP2BP23019C0 | PA | C | P2 | PK | ME | 230 | 19 | PB | N | BILL 2 | B02 | S1 | FF | R00 | ACF07 | PB-3 | 230 | FF | MEP |  |  |  |
| PP2BP27023C30 |  | PA-P2 ; 2nd Fix, ELV system (Parking Area)_PB-3 | 36d | 2012-09-29 | 2012-11-12 | PP2BP27013C30 |  |  |  |  | 68.88d | 0d | ELECTRICAL [295.2 h]; Cost |  |  | CP3PA27020C0 | PP2BP27023C0 | PA | C | P2 | PK | ME | 270 | 23 | PB | N | BILL 2 | B02 | S1 | 2F | R00 | ACF07 | PB-3 | 270 | 2n | MEP |  |  |  |
| PP2BP26017C30 |  | PA-P2 ; Final Fix, Electrical System (Parking Area)_PB-3 | 12d | 2012-10-09 | 2012-10-22 | PP2BP09902C30, PP2BP26022C30, PGLS103331C360, PGLS103331C370, PGLS103331C350, PGLS103331C340, PGLS103331C330, PGLS103391C220, PP2BE09502C0 SS, PP2BP23019C30 |  |  |  |  | 84d | 15.12d | ELECTRICAL [2343.6 h]; Cost |  |  | CP3PA26017C0 | PP2BP26017C0 | PA | C | P2 | PK | ME | 260 | 17 | PB | N | BILL 2 | B02 | S1 | FF | R00 | ACF07 | PB-3 | 260 | FF | MEP |  |  |  |
| PP2BP27030C30 |  | PA-P2 ; Final Fix, ELV system (Parking Area)_PB-3 | 12d | 2012-11-12 | 2012-11-27 | PP2BP09902C30, PP2BP27023C30, PP2BP27023C30 FF, PGLS103331C360, PGLS103331C370, PGLS103331C350, PGLS103331C340, PGLS103331C330, PGLS103391C220, PP2BE09502C0 SS, PP2BP26017C30 |  |  |  |  | 68.88d | 0d | ELECTRICAL [375.6 h]; Cost |  |  | CP3PA27030C0 | PP2BP27030C0 | PA | C | P2 | PK | ME | 270 | 30 | PB | N | BILL 2 | B02 | S1 | FF | R00 | ACF07 | PB-3 | 270 | FF | MEP |  |  |  |
| PP2BP09903C30 |  | PA-P2 ; Concrete Sealer (Floor) (Parking Area)_PB-3 | 8.88d | 2012-11-27 | 2012-12-08 | PP2BP21113C30, PP2BP22011C30, PP2BP23019C30, PP2BP26017C30, PP2BP27030C30, PGLS103331C360, PGLS103331C370, PGLS103331C350, PGLS103331C340, PGLS103331C330, PGLS103391C220, PP2BE09502C0 SS |  |  |  |  | 68.88d | 0d | ASSORTED FLOOR FINISH [3560 h]; ASSORTED FLOOR FINISH [1975.4 m2]; Cost |  |  | AP2PK09903C0 | PP2BP09903C0 | PA | C | P2 | PK | FF | 096 | 03 | PB | N | BILL 2 | B02 | S1 | 05 | R00 | ACF06 | PB-3 | CS |  |  |  |  |  |
| PP2BP05509C30 |  | PA-P2 ; Grill & Louvers (Parking Area)_PB-3 | 5.78d | 2012-12-09 | 2012-12-15 | PP2BP09903C30, PGLS103331C360, PGLS103331C370, PGLS103331C350, PGLS103331C340, PGLS103331C330, PGLS103391C220, PP2BE09502C0 SS |  |  |  |  | 82.22d | 62.99d | SECONDARY STEEL [274 h]; Cost | 328 | 956 | CP3PA09901C0 | PP3AP09901C0 | PA | C | P2 | PK | SW | 055 | 01 | PB | N | BILL 2 | B02 | S1 | 02 | R00 | ACF03 | PB-3 | 056 |  |  |  |  |  |
| PP2BP11006C30 |  | PA-P2 ; Wall Protection (WP, CG, WG, FCG) (Parking Area)_PB-3 | 6.12d | 2012-12-09 | 2012-12-16 | PP2BP09903C30, PGLS103331C360, PGLS103331C370, PGLS103331C350, PGLS103331C340, PGLS103331C330, PGLS103391C220, PP2BE09502C0 SS |  |  |  |  | 68.88d | 0d | FF&E [68 h]; Cost | 326 | 1001 | CP3PA11001C0 | PP2BP11006C0 | PA | C | P2 | PK | WF | 097 | 06 | PB | N | BILL 2 | B02 | S1 | 03 | R00 | ACF08 | PB-3 | 097 |  |  |  |  |  |
| PP2BP11004C30 |  | PA-P2 ; Floor Marking & Signage (Parking Area)_PB-3 | 8d | 2012-12-16 | 2012-12-25 | PP2BP09903C30, PP2BP11006C30, PGLS103331C360, PGLS103331C370, PGLS103331C350, PGLS103331C340, PGLS103331C330, PGLS103391C220, PP2BE09502C0 SS |  |  |  |  | 68.88d | 0d | SIGNAGES [823 h]; SIGNAGES [114.45 no]; Cost |  |  | AP2PK11004C0 | PP2BP11004C0 | PA | C | P2 | PK | SA | 110 | 04 | PB | N | BILL 2 | B02 | S1 | 09 | R00 | ACF08 | PB-3 | c |  |  |  |  |  |
| PP2BP11009C30 |  | PA-P2 ; FF&E (Parking Area)_PB-3 | 5d | 2012-12-25 | 2012-12-31 | PP2BP11004C30, PGLS103331C360, PGLS103331C370, PGLS103331C350, PGLS103331C340, PGLS103331C330, PGLS103391C220, PP2BE09502C0 SS |  |  |  |  | 68.88d | 49.64d | FF&E [361 h]; Cost |  |  | AP3PK11004C0 | PP3BP11004C0 | PA | C | P2 | PK | SA | 110 | 04 | PB | N | BILL 2 | B02 | S1 | 01 | R00 | ACF08 | PB-3 | a |  |  |  |  |  |
|  | BE1 | **ELECTRICAL ROOMS (3 NOS.) : Zone PB-1** |  | 2011-09-05 | 2012-10-22 |  |  |  |  |  |  |  |  |  |  |  |  |  |  |  |  |  |  |  |  |  |  |  |  |  |  |  |  |  |  |  |  |  |  |
| PP2BE04001C0 |  | PA-P2 ; Block Wall Works (Elec RM)_PB-1 | 14d | 2011-09-05 A | 2012-03-14 | PP2BE09903C0 | 90% | 1.4d | 2011-09-04 | 2011-09-20 | 39.23d | 0d | BLOCKWORKS [301 h]; BLOCKWORKS [86 m2]; Cost |  |  | AP2ER04001C0 | PP2BE04001C0 | PA | C | P2 | ER | BL | 040 | 01 | PB | N | BILL 2 | B02 | S1 | BL | R00 | ACF06 | PB-1 | 040 |  |  |  |  |  |
| PP2BE09903C0 |  | PA-P2 ; Ceiling Prime & 1st coat (Elec RM)_PB-1 | 18d | 2012-02-21 | 2012-03-13 | PGLS103391C100, PGLS103391C110, PP3BE09903C0 |  |  |  |  | 39.23d | 0d | ASSORTED CEILING FINISH [7 h]; Cost |  | 1544 | CP2ME09905C0 | PP2BE09903C0 | PA | C | P2 | ER | PA | 099 | 03 | PB | N | BILL 2 | B02 | S1 | 01 | R00 | ACF06 | PB-1 | 099 |  |  |  |  |  |
| PP2BE09201C0 |  | PA-P2 ; Metal Studs (Elec RM)_PB-1 | 9.88d | 2012-03-14 | 2012-03-26 | PP2BE04001C0 |  |  |  |  | 206.22d | 0d | PARTITIONS [29 h]; PARTITIONS [4 m]; Cost | 313 | 1372 | CP2ME09201C0 | PP2BE09201C0 | PA | C | P2 | ER | PT | 092 | 01 | PB | N | BILL 2 | B02 | S1 | 1F | R00 | ACF06 | PB-1 | 092 |  | GP | PMS |  |  |
| PP2BE23001C0 |  | PA-P2 ; 1st Fix, Inst. of Supports for MEP (Elec RM)_PB-1 | 12d | 2012-03-14 | 2012-03-28 | PP2BE04001C0 |  |  |  |  | 39.23d | 0d | MECHANICAL [625.2 h]; Cost |  |  | CP2ME23010C0 | PP2BE23001C0 | PA | C | P2 | ER | ME | 230 | 01 | PB | N | BILL 2 | B02 | S1 | 1F | R00 | ACF04 | PB-1 | 230 | 1S | MEP | M1F |  |  |
| PP2BE08102C0 |  | PA-P2 ; Metal Door Frames (Elec RM)_PB-1 | 11.88d | 2012-03-26 | 2012-04-09 | PP2BE09201C0, GNHE08101C0 |  |  |  |  | 241.47d | 117.25d | METAL DOORS [23 h]; Cost | 316 | 1374 | CP2ME08101C0 | PP2BE08102C0 | PA | C | P2 | ER | DO | 081 | 02 | PB | N | BILL 2 | B02 | S1 | DF | R00 | ACF06 | PB-1 | 081 |  |  |  | 08 |  |
| PP2BE09202C0 |  | PA-P2 ; Partitions 1st face (Elec RM)_PB-1 | 18d | 2012-03-28 | 2012-04-18 | PP2BE09201C0 SS+12d |  |  |  |  | 206.22d | 82d | PARTITIONS [4 m]; PARTITIONS [16 h]; Cost | 314 | 1373 | CP2ME09203C0 | PP2BE09202C0 | PA | C | P2 | ER | PT | 092 | 02 | PB | N | BILL 2 | B02 | S1 | 2F | R00 | ACF06 | PB-1 | 092 |  | GP | P1F |  |  |
| PP2BE23002C0 |  | PA-P2 ; 1st Fix, Inst of CHW pipe (Elec RM)_PB-1 | 24d | 2012-03-28 | 2012-04-25 | PP2BE23001C0, PP2BE04001C0 |  |  |  |  | 69.22d | 30d | MECHANICAL [3097.2 h]; Cost |  |  | CP2ME23012C0 | PP2BE23002C0 | PA | C | P2 | ER | ME | 230 | 02 | PB | N | BILL 2 | B02 | S1 | 1F | R00 | ACF04 | PB-1 | 230 | 1S | MEP | M1F |  |  |
| PP2BE23003C0 |  | PA-P2 ; 1st Fix, Inst of Ducting (Elec RM)_PB-1 | 24d | 2012-03-28 | 2012-04-25 | PP2BE23001C0, PP2BE04001C0 |  |  |  |  | 39.23d | 0d | MECHANICAL [3948 h]; Cost |  |  | CP2ME23014C0 | PP2BE23003C0 | PA | C | P2 | ER | ME | 230 | 03 | PB | N | BILL 2 | B02 | S1 | 1F | R00 | ACF04 | PB-1 | 230 | 1S | MEP | M1F |  |  |
| PP2BE23007C0 |  | PA-P2 ; 2nd Fix, Inst of VAV'S CHW connection (Elec RM)_PB-1 | 30d | 2012-03-28 | 2012-05-02 | PP2BE23001C0 |  |  |  |  | 63.23d | 0d | MECHANICAL [50.4 h]; Cost |  |  | CP2ME23020C0 | PP2BE23007C0 | PA | C | P2 | ER | ME | 230 | 07 | PB | N | BILL 2 | B02 | S1 | 2F | R00 | ACF07 | PB-1 | 230 | 2n | MEP |  |  |  |
| PP2BE23008C0 |  | PA-P2 ; 2nd Fix, Inst of Equipment (FCU,FAN,PUMP) (Elec RM)_PB-1 | 30d | 2012-03-28 | 2012-05-02 | PP2BE23007C0 FF |  |  |  |  | 221.22d | 97d | MECHANICAL [2304 h]; Cost |  |  | CP2ME23022C0 | PP2BE23008C0 | PA | C | P2 | ER | ME | 230 | 08 | PB | N | BILL 2 | B02 | S1 | 2F | R00 | ACF04 | PB-1 | 230 | 2n | MEP |  |  | H |
| PP2BE23010C0 |  | PA-P2 ; 2nd Fix, Insulation of CHW pipe & Duct (Elec RM)_PB-1 | 30d | 2012-03-28 | 2012-05-02 | PP2BE23001C0 |  |  |  |  | 63.23d | 24d | MECHANICAL [3702 h]; Cost |  |  | CP2ME23026C0 | PP2BE23010C0 | PA | C | P2 | ER | ME | 230 | 10 | PB | N | BILL 2 | B02 | S1 | 2F | R00 | ACF07 | PB-1 | 230 | 2n | MEP |  |  |  |
| PP2BE09902C0 |  | PA-P2 ; Wall Prime & 1st coat (Elec RM)_PB-1 | 18d | 2012-04-01 | 2012-04-22 | PP2BE04001C0 FS+15d |  |  |  |  | 218.22d | 0d | WALL PAINT [238 h]; WALL PAINT [296 m2]; Cost | 328 | 1378 | CP2ME09901C0 | PP2BE09902C0 | PA | C | P2 | ER | PA | 099 | 02 | PB | N | BILL 2 | B02 | S1 | 01 | R00 | ACF06 | PB-1 | 099 |  |  |  |  |  |
| PP2BE08107C0 |  | PA-P2 ; Access Floor (Elec RM)_PB-1 | 12d | 2012-04-22 | 2012-05-06 | PP2BE09902C0 |  |  |  |  | 218.22d | 0d | ASSORTED FLOOR FINISH [72 h]; ASSORTED FLOOR FINISH [39 m2]; Cost | 317 | 1375 | CP2ER08105C0 |  | PA | C | P2 | ER | FF | 096 | 07 | PB | N | BILL 2 | B02 | S1 | 04 | R00 | ACF06 | PB-1 | AF |  |  |  | 08 |  |
| PP2BE23004C0 |  | PA-P2 ; 1st Fix, Inst of VCD's/FD's (Elec RM)_PB-1 | 24d | 2012-04-25 | 2012-05-23 | PP2BE04001C0, PP2BE23003C0 |  |  |  |  | 45.23d | 6d | MECHANICAL [1168.8 h]; Cost |  |  | CP2ME23016C0 | PP2BE23004C0 | PA | C | P2 | ER | ME | 230 | 04 | PB | N | BILL 2 | B02 | S1 | 1F | R00 | ACF04 | PB-1 | 230 | 1S | MEP | M1F |  |  |
| PP2BE23009C0 |  | PA-P2 ; 2nd Fix, Inst of VCD's/FD's (Elec RM)_PB-1 | 30d | 2012-04-25 | 2012-05-30 | PP2BE23003C0 |  |  |  |  | 39.23d | 0d | MECHANICAL [1168.8 h]; Cost |  |  | CP2ME23024C0 | PP2BE23009C0 | PA | C | P2 | ER | ME | 230 | 09 | PB | N | BILL 2 | B02 | S1 | 2F | R00 | ACF07 | PB-1 | 230 | 2n | MEP |  |  |  |
| PP2BE26001C0 |  | PA-P2 ; 1st Fix, Inst of Trunking/Conduiting (Elec RM)_PB-1 | 24d | 2012-04-25 | 2012-05-23 | PP2BE23001C0, PP2BE04001C0, PP2BE23003C0 |  |  |  |  | 45.23d | 0d | ELECTRICAL [1699.2 h]; Cost |  |  | CP2ME26010C0 | PP2BE26001C0 | PA | C | P2 | ER | ME | 260 | 01 | PB | N | BILL 2 | B02 | S1 | 1F | R00 | ACF04 | PB-1 | 260 | 1S | MEP | M1F |  |  |
| PP2BE26002C0 |  | PA-P2 ; 1st Fix, Inst of Cable Tray (Elec RM)_PB-1 | 24d | 2012-04-25 | 2012-05-23 | PP2BE04001C0, PP2BE23003C0 |  |  |  |  | 45.23d | 0d | ELECTRICAL [63.6 h]; Cost |  |  | CP2ME26012C0 | PP2BE26002C0 | PA | C | P2 | ER | ME | 260 | 02 | PB | N | BILL 2 | B02 | S1 | 1F | R00 | ACF04 | PB-1 | 260 | 1S | MEP | M1F |  |  |
| PP2BE27002C0 |  | PA-P2 ; 1st Fix, Inst of Trunking for ELV system (Elec RM)_PB-1 | 24d | 2012-04-25 | 2012-05-23 | PP2BE26001C0 SS, PP2BE04001C0, PP2BE23003C0 |  |  |  |  | 79.22d | 24d | ELECTRICAL [764.4 h]; Cost |  |  | CP2ME27010C0 | PP2BE27002C0 | PA | C | P2 | ER | ME | 270 | 02 | PB | N | BILL 2 | B02 | S1 | 1F | R00 | ACF04 | PB-1 | 270 | 1S | MEP | M1F |  |  |
| PP2BE26009C0 |  | PA-P2 ; 2nd Fix, Inst of Equipment (DB, TR, SG) (Elec RM)_PB-1 | 30d | 2012-05-06 | 2012-06-10 | PP2BE08107C0 |  |  |  |  | 218.22d | 37d | ELECTRICAL [1192.8 h]; Cost |  |  | CP2ME26024C0 | PP2BE26009C0 | PA | C | P2 | ER | ME | 260 | 09 | PB | N | BILL 2 | B02 | S1 | 2F | R00 | ACF04 | PB-1 | 260 | 2n | MEP |  |  | E |
| PP2BE26007C0 |  | PA-P2 ; 2nd Fix, Wiring for Power/Lighting/Emergency (Elec RM)_PB-1 | 30d | 2012-05-23 | 2012-06-28 | PP2BE26001C0 |  |  |  |  | 49.23d | 10d | ELECTRICAL [76.8 h]; Cost |  |  | CP2ME26020C0 | PP2BE26007C0 | PA | C | P2 | ER | ME | 260 | 07 | PB | N | BILL 2 | B02 | S1 | 2F | R00 | ACF07 | PB-1 | 260 | 2n | MEP |  |  |  |
| PP2BE26008C0 |  | PA-P2 ; 2nd Fix, Cable Pulling (Elec RM)_PB-1 | 30d | 2012-05-23 | 2012-06-28 | PP2BE26002C0 |  |  |  |  | 49.23d | 10d | ELECTRICAL [4096.8 h]; Cost |  |  | CP2ME26022C0 | PP2BE26008C0 | PA | C | P2 | ER | ME | 260 | 08 | PB | N | BILL 2 | B02 | S1 | 2F | R00 | ACF07 | PB-1 | 260 | 2n | MEP |  |  |  |
| PP2BE27001C0 |  | PA-P2 ; 1st Fix, Wiring/ Cabling work (Elec RM)_PB-1 | 24d | 2012-05-23 | 2012-06-21 | PP2BE27002C0 SS, PP2BE04001C0, PP2BE26002C0 |  |  |  |  | 55.23d | 16d | ELECTRICAL [76.8 h]; Cost |  |  | CP2ME27012C0 | PP2BE27001C0 | PA | C | P2 | ER | ME | 270 | 01 | PB | N | BILL 2 | B02 | S1 | 1F | R00 | ACF04 | PB-1 | 270 | 1S | MEP | M1F |  |  |
| PP2BE09501C0 |  | PA-P2 ; Ceiling Grid and Service Tile (Elec RM)_PB-1 | 16d | 2012-05-30 | 2012-06-19 | PP2BE23002C0, PP2BE23003C0, PP2BE23004C0, PP2BE23007C0, PP2BE23009C0, PP2BE23010C0, PP2BE26001C0, PP2BE26002C0 |  |  |  |  | 39.23d | 0d | CEILING GRID FOR GYPSUM [1543.79 h]; CEILING GRID FOR GYPSUM [132.21 m2]; Cost | 323 | 1408 | CP2ME09501C0 | PP2BE09501C0 | PA | C | P2 | ER | CE | 095 | 01 | PB | N | BILL 2 | B02 | S1 | 01 | R00 | ACF06 | PB-1 | 095 |  |  |  |  |  |
| PP2BE21104C0 |  | PA-P2 ; 2nd Fix, Inst of Sprinkler droppers (Elec RM)_PB-1 | 30d | 2012-06-19 | 2012-07-24 | PP2BE09501C0 |  |  |  |  | 199.22d | 179.99d | MECHANICAL [3525.6 h]; Cost |  |  | CP2ME21120C0 | PP2BE21104C0 | PA | C | P2 | ER | ME | 211 | 04 | PB | N | BILL 2 | B02 | S1 | 2F | R00 | ACF07 | PB-1 | 211 | 2n | MEP |  |  |  |
| PP2BE21105C0 |  | PA-P2 ; 2nd Fix, Inst of Zone Control Valve (Elec RM)_PB-1 | 30d | 2012-06-19 | 2012-07-24 | PP2BE09501C0 |  |  |  |  | 199.22d | 179.99d | MECHANICAL [1062 h]; Cost |  |  | CP2ME21124C0 | PP2BE21105C0 | PA | C | P2 | ER | ME | 211 | 05 | PB | N | BILL 2 | B02 | S1 | 2F | R00 | ACF07 | PB-1 | 211 | 2n | MEP |  |  |  |
| PP2BE23006C0 |  | PA-P2 ; 2nd Fix, Inst of Flexible Duct & Plenum boxes (Elec RM)_PB-1 | 18d | 2012-06-19 | 2012-07-10 | PP2BE09501C0 |  |  |  |  | 39.23d | 0d | MECHANICAL [33.6 h]; Cost |  |  | CP2ME23032C0 | PP2BE23006C0 | PA | C | P2 | ER | ME | 230 | 06 | PB | N | BILL 2 | B02 | S1 | FF | R00 | ACF07 | PB-1 | 230 | FF | MEP |  |  |  |
| PP2BE27005C0 |  | PA-P2 ; 2nd Fix, Wiring Droppers (Elec RM)_PB-1 | 30d | 2012-06-19 | 2012-07-24 | PP2BE09501C0 |  |  |  |  | 199.22d | 179.99d | ELECTRICAL [76.8 h]; Cost |  |  | CP2ME27022C0 | PP2BE27005C0 | PA | C | P2 | ER | ME | 270 | 05 | PB | N | BILL 2 | B02 | S1 | 2F | R00 | ACF07 | PB-1 | 270 | 2n | MEP |  |  |  |
| PP2BE27006C0 |  | PA-P2 ; 2nd Fix, Inst of ELV Equipment (Panels) (Elec RM)_PB-1 | 30d | 2012-06-19 | 2012-07-24 | PP2BE09501C0 |  |  |  |  | 124.22d | 0d | ELECTRICAL [183.6 h]; Cost |  |  | CP2ME27020C0 | PP2BE27006C0 | PA | C | P2 | ER | ME | 270 | 06 | PB | N | BILL 2 | B02 | S1 | 2F | R00 | ACF04 | PB-1 | 270 | 2n | MEP |  |  | E |
| PP2BE09502C0 |  | PA-P2 ; Ceiling closure (Elec RM)_PB-1 | 20d | 2012-07-10 | 2012-08-02 | PP2BE09501C0, PP2BE23006C0, PP2BE26007C0, PP2BE26008C0, PP2BE27001C0, PGLS103331C360, PGLS103331C370, PGLS103331C350, PGLS103331C340, PGLS103331C330, PGLS103391C220 |  |  |  |  | 39.23d | 0d | ASSORTED CEILING FINISH [87.33 h]; CEILING GYPSUM [43.46 h]; ASSORTED CEILING FINISH [142 m2]; CEILING GYPSUM [132 m2]; Cost | 324 | 1409 | CP2ME09503C0 | PP2BE09502C0 | PA | C | P2 | ER | CE | 095 | 02 | PB | N | BILL 2 | B02 | S1 | 02 | R00 | ACF06 | PB-1 | 095 |  |  |  |  |  |
| PP2BE26004C0 |  | PA-P2 ; Final Fix, Inst of Ceiling rose (Elec RM)_PB-1 | 18d | 2012-07-12 | 2012-08-02 | PP2BE09501C0, PGLS103331C360, PGLS103331C370, PGLS103331C350, PGLS103331C340, PGLS103331C330, PGLS103391C220, PP2BE09502C0 FF |  |  |  |  | 191.22d | 171.99d | ELECTRICAL [25.2 h]; Cost |  |  | CP2ME26032C0 | PP2BE26004C0 | PA | C | P2 | ER | ME | 260 | 04 | PB | N | BILL 2 | B02 | S1 | FF | R00 | ACF07 | PB-1 | 260 | FF | MEP |  |  |  |
| PP2BE09901C0 |  | PA-P2 ; Wall - final Paint (Elec RM)_PB-1 | 12d | 2012-07-19 | 2012-08-02 | PP2BE09902C0, PGLS103331C360, PGLS103331C370, PGLS103331C350, PGLS103331C340, PGLS103331C330, PGLS103391C220, PP2BE23010C0, PP2BE09904C0 FF |  |  |  |  | 191.22d | 171.99d | WALL PAINT [129 h]; WALL PAINT [159 m2]; Cost | 329 | 1379 | CP2ME09903C0 | PP2BE09901C0 | PA | C | P2 | ER | PA | 099 | 01 | PB | N | BILL 2 | B02 | S1 | 02 | R00 | ACF06 | PB-1 | 099 |  |  |  |  |  |
| PP2BE09203C0 |  | PA-P2 ; Partitions Closing (Elec RM)_PB-1 | 27d | 2012-07-24 | 2012-08-27 | PAFOA09201C1 FF, PP2BE09202C0, PP2BE08102C0 FF, PGLS103331C360, PGLS103331C370, PGLS103331C350, PGLS103331C340, PGLS103331C330, PGLS103391C220, PP2BE27006C0 |  |  |  |  | 124.22d | 0d | PARTITIONS [4 m]; PARTITIONS [18 h]; Cost |  | 1540 | CP2ME09205C0 | PP2BE09203C0 | PA | C | P2 | ER | PT | 092 | 03 | PB | N | BILL 2 | B02 | S1 | FF | R00 | ACF06 | PB-1 | 092 |  | GP | P2F |  |  |
| PP2BE27003C0 |  | PA-P2 ; Final Fix, BMS connection work to Equipment (Elec RM)_PB-1 | 18d | 2012-07-24 | 2012-08-14 | PP2BE26009C0, PGLS103331C360, PGLS103331C370, PGLS103331C350, PGLS103331C340, PGLS103331C330, PGLS103391C220, PP2BE27006C0 |  |  |  |  | 181.22d | 161.99d | ELECTRICAL [2335.2 h]; Cost |  |  | CP2ME27032C0 | PP2BE27003C0 | PA | C | P2 | ER | ME | 270 | 03 | PB | N | BILL 2 | B02 | S1 | FF | R00 | ACF07 | PB-1 | 270 | FF | MEP |  |  |  |
| PP2BE09904C0 |  | PA-P2 ; Ceiling - final Paint (Elec RM)_PB-1 | 6d | 2012-07-26 | 2012-08-02 | PP2BE09903C0, PGLS103331C360, PGLS103331C370, PGLS103331C350, PGLS103331C340, PGLS103331C330, PGLS103391C220, PP2BE09502C0 FF |  |  |  |  | 191.22d | 0d | ASSORTED CEILING FINISH [4 h]; Cost |  | 1546 | CP2ME09907C0 | PP2BE09904C0 | PA | C | P2 | ER | PA | 099 | 04 | PB | N | BILL 2 | B02 | S1 | 02 | R00 | ACF06 | PB-1 | 099 |  |  |  |  |  |
| PP2BE21101C0 |  | PA-P2 ; Final Fix, Gaseous Fire Suppression Electrical Room (Elec RM)_PB-1 | 18d | 2012-08-02 | 2012-08-26 | PP2BE09502C0, PGLS103331C360, PGLS103331C370, PGLS103331C350, PGLS103331C340, PGLS103331C330, PGLS103391C220 |  |  |  |  | 173.22d | 153.99d | MECHANICAL [697.2 h]; Cost |  |  | CP2ME21109C0 | PP2BE21101C0 | PA | C | P2 | ER | ME | 211 | 01 | PB | N | BILL 2 | B02 | S1 | FF | R00 | ACF07 | PB-1 | 211 | FF | MEP |  |  |  |
| PP2BE21102C0 |  | PA-P2 ; Final Fix, Gaseous Fire Suppression Transformer room (Elec RM)_PB-1 | 18d | 2012-08-02 | 2012-08-26 | PP2BE09502C0, PGLS103331C360, PGLS103331C370, PGLS103331C350, PGLS103331C340, PGLS103331C330, PGLS103391C220 |  |  |  |  | 173.22d | 153.99d | MECHANICAL [697.2 h]; Cost |  |  | CP2ME21111C0 | PP2BE21102C0 | PA | C | P2 | ER | ME | 211 | 02 | PB | N | BILL 2 | B02 | S1 | FF | R00 | ACF07 | PB-1 | 211 | FF | MEP |  |  |  |
| PP2BE21103C0 |  | PA-P2 ; Final Fix, Gaseous Fire Suppression Telecom Room (Elec RM)_PB-1 | 18d | 2012-08-02 | 2012-08-26 | PP2BE09502C0, PGLS103331C360, PGLS103331C370, PGLS103331C350, PGLS103331C340, PGLS103331C330, PGLS103391C220 |  |  |  |  | 173.22d | 153.99d | MECHANICAL [697.2 h]; Cost |  |  | CP2ME21113C0 | PP2BE21103C0 | PA | C | P2 | ER | ME | 211 | 03 | PB | N | BILL 2 | B02 | S1 | FF | R00 | ACF07 | PB-1 | 211 | FF | MEP |  |  |  |
| PP2BE23005C0 |  | PA-P2 ; Final Fix, Inst of Grilles & Diffusers (Elec RM)_PB-1 | 18d | 2012-08-02 | 2012-08-26 | PP2BE09502C0, PGLS103331C360, PGLS103331C370, PGLS103331C350, PGLS103331C340, PGLS103331C330, PGLS103391C220 |  |  |  |  | 173.22d | 153.99d | MECHANICAL [495.6 h]; Cost |  |  | CP2ME23030C0 | PP2BE23005C0 | PA | C | P2 | ER | ME | 230 | 05 | PB | N | BILL 2 | B02 | S1 | FF | R00 | ACF07 | PB-1 | 230 | FF | MEP |  |  |  |
| PP2BE26003C0 |  | PA-P2 ; Final Fix, Termination & Gladding of Cables (Elec RM)_PB-1 | 18d | 2012-08-02 | 2012-08-26 | PP2BE09502C0, PGLS103331C360, PGLS103331C370, PGLS103331C350, PGLS103331C340, PGLS103331C330, PGLS103391C220 |  |  |  |  | 173.22d | 153.99d | ELECTRICAL [512.4 h]; Cost |  |  | CP2ME26030C0 | PP2BE26003C0 | PA | C | P2 | ER | ME | 260 | 03 | PB | N | BILL 2 | B02 | S1 | FF | R00 | ACF07 | PB-1 | 260 | FF | MEP |  |  |  |
| PP2BE26005C0 |  | PA-P2 ; Final Fix, Inst of Switch/Sockets (Elec RM)_PB-1 | 18d | 2012-08-02 | 2012-08-26 | PP2BE09502C0, PGLS103331C360, PGLS103331C370, PGLS103331C350, PGLS103331C340, PGLS103331C330, PGLS103391C220 |  |  |  |  | 173.22d | 153.99d | ELECTRICAL [1633.2 h]; Cost |  |  | CP2ME26034C0 | PP2BE26005C0 | PA | C | P2 | ER | ME | 260 | 05 | PB | N | BILL 2 | B02 | S1 | FF | R00 | ACF07 | PB-1 | 260 | FF | MEP |  |  |  |
| PP2BE26006C0 |  | PA-P2 ; Final Fix, Inst of Light fittings (Elec RM)_PB-1 | 18d | 2012-08-02 | 2012-08-26 | PP2BE09502C0, PGLS103331C360, PGLS103331C370, PGLS103331C350, PGLS103331C340, PGLS103331C330, PGLS103391C220 |  |  |  |  | 173.22d | 153.99d | ELECTRICAL [3124.8 h]; Cost |  |  | CP2ME26039C0 | PP2BE26006C0 | PA | C | P2 | ER | ME | 260 | 06 | PB | N | BILL 2 | B02 | S1 | FF | R00 | ACF07 | PB-1 | 260 | FF | MEP |  |  |  |
| PP2BE27004C0 |  | PA-P2 ; Final Fix, Inst of ELV device (Detector/Speaker) (Elec RM)_PB-1 | 18d | 2012-08-02 | 2012-08-26 | PP2BE09502C0, PGLS103331C360, PGLS103331C370, PGLS103331C350, PGLS103331C340, PGLS103331C330, PGLS103391C220 |  |  |  |  | 173.22d | 153.99d | ELECTRICAL [307.2 h]; Cost |  |  | CP2ME27030C0 | PP2BE27004C0 | PA | C | P2 | ER | ME | 270 | 04 | PB | N | BILL 2 | B02 | S1 | FF | R00 | ACF07 | PB-1 | 270 | FF | MEP |  |  |  |
| PP2BE09601C0 |  | PA-P2 ; Flooring (Elec RM)_PB-1 | 18d | 2012-08-27 | 2012-09-17 | PP2BE09902C0, PP2BE09903C0, PP2BE23008C0, PGLS103331C360, PGLS103331C370, PGLS103331C350, PGLS103331C340, PGLS103331C330, PGLS103391C220, PP2BE27006C0, PP2BE09203C0 |  |  |  |  | 124.22d | 0d | ASSORTED FLOOR FINISH [1024 h]; ASSORTED FLOOR FINISH [566 m2]; Cost | 326 | 1377 | CP2ME09601C0 | PP2BE09601C0 | PA | C | P2 | ER | FF | 096 | 01 | PB | N | BILL 2 | B02 | S1 | 01 | R00 | ACF06 | PB-1 | FF |  |  |  |  |  |
| PP2BE08103C0 |  | PA-P2 ; Metal Doors (Elec RM)_PB-1 | 12d | 2012-09-17 | 2012-10-01 | PP2BE08102C0, PGLS103331C360, PGLS103331C370, PGLS103331C350, PGLS103331C340, PGLS103331C330, PGLS103391C220, PP2BE09601C0 |  |  |  |  | 124.22d | 0d | METAL DOORS [20 h]; METAL DOORS [2 no]; Cost | 317 | 1375 | CP2ME08105C0 | PP2BE08103C0 | PA | C | P2 | ER | DO | 081 | 03 | PB | N | BILL 2 | B02 | S1 | DR | R00 | ACF06 | PB-1 | 081 |  |  |  | 08 |  |
| PP2BE22001C0 |  | PA-P2 ; Final Fix, Inst of All drain (Elec RM)_PB-1 | 18d | 2012-09-17 | 2012-10-08 | PP2BE09601C0, PGLS103331C360, PGLS103331C370, PGLS103331C350, PGLS103331C340, PGLS103331C330, PGLS103391C220 |  |  |  |  | 136.22d | 116.99d | PLUMBING [2156.4 h]; Cost |  |  | CP2ME22037C0 | PP2BE22001C0 | PA | C | P2 | ER | ME | 220 | 01 | PB | N | BILL 2 | B02 | S1 | FF | R00 | ACF07 | PB-1 | 220 | FF | MEP |  |  |  |
| PP2BE05501C0 |  | PA-P2 ; Handrails & balustrade (Elec RM)_PB-1 | 18d | 2012-10-01 | 2012-10-22 | PP2BE09902C0, PGLS103331C360, PGLS103331C370, PGLS103331C350, PGLS103331C340, PGLS103331C330, PGLS103391C220, PP2BE08103C0 |  |  |  |  | 124.22d | 104.99d | SECONDARY STEEL [73 h]; Cost |  |  | CP2ME05501C0 | PP2BE05501C0 | PA | C | P2 | ER | SW | 055 | 01 | PB | N | BILL 2 | B02 | S1 | 01 | R00 | ACF03 | PB-1 | a |  |  |  |  |  |
