Schedule from Primavera P6, 2011-12-22 to 2011-12-22.

## Resources

| Resource | Group | Unit | Rate |
| --- | --- | --- | --- |
| Labor General | labor |  |  |
| Cost | material | AED | 1 |

## Schedule

| ID | Duration | Start | Predecessors | Planned start | Planned finish | Total float | Free float | Resources | change id | CCAD BUILDING(SET) | CCAD PHASE(SET) | CCAD FLOOR(SET) | CCAD ZONE(SET) | CCAD WORK(SET) | CCAD SECTION(SET) | CCAD SERIAL No.(SET) | CCAD SUB ZONE MEP(SET) | CCAD CBS(SET) | CCAD BILL(SET) | CCAD HANDOVER(SET) | CCAD TAG(SET) | CCAD REV(SET) | CCADACF (SET) | CCAD CSA | CCAD SSCF |
| --- | --- | --- | --- | --- | --- | --- | --- | --- | --- | --- | --- | --- | --- | --- | --- | --- | --- | --- | --- | --- | --- | --- | --- | --- | --- |
| CB-01 ; ²nd, Wall Inspection by Consultant (Laser,Save) | 0d | 2011-12-22 | C01LW22011C0 (other project), C01LW22015C0 (other project), C01LW26009C0 (other project) | 2012-01-07 | 2012-01-12 | 0d | 6d | Labor General [0.6 h]; Cost | C01LW01005C0 | CB | C | 01 | LW | ME | 010 | 05 | 2n | BILL 4 | B04 | S1 | WI | R00 | ACF07 | MEP | 010 |

## Activity codes

| Code | Value | Meaning |
| --- | --- | --- |
| CCAD BILL(SET) | B04 | CLINIC |
| CCAD BUILDING(SET) | CB | Clinic Building |
| CCAD CBS(SET) | BILL 4 | Clinic |
| CCAD FLOOR(SET) | 01 | Level 1 |
| CCAD HANDOVER(SET) | S1 | Section 1 - Time for Completion |
| CCAD PHASE(SET) | C | Construction |
| CCAD REV(SET) | R00 | Rev 00 - Original Accepted Baseline |
| CCAD SECTION(SET) | 010 | Inspection |
| CCAD SERIAL No.(SET) | 05 | Activity 1 |
| CCAD SSCF | 010 | Inspection |
| CCAD SUB ZONE MEP(SET) | 2n | 2nd fix |
| CCAD TAG(SET) | WI | Wall Inspection |
| CCAD WORK(SET) | ME | MEP |
| CCAD ZONE(SET) | LW | Laser,Wave,Intralase |
| CCADACF (SET) | ACF07 | MEP 2nd Fix |
