Schedule from Primavera P6, 2012-06-25 to 2012-09-22.

## Schedule

| ID | Duration | Start | Finish | Total float | Free float |
| --- | --- | --- | --- | --- | --- |
| PT-11 ; Final Fix, TerMin`tio. & Eladding of Cabmes (PAT SM-1i | 0d | 2012-06-25 | 2012-09-22 A | 61d | 36d |
