# JW Marriott - Baseline Programme

Schedule from Primavera P6, 2014-08-31 to 2017-07-02, data date 2014-08-31, costs in QAR.
Must finish by 2017-07-03

## Calendars

- * JWM - 6 Days per Week + Qatar Holidays: Mon-Thu 08:00-16:00; Fri off; Sat-Sun 08:00-16:00. Exceptions (off unless hours are given): 2014-10-04 to 2014-10-06, 2014-12-18, 2015-02-10, 2015-07-15 to 2015-07-16, 2015-09-20 to 2015-09-22, 2015-12-19, 2016-02-10, 2016-07-05 to 2016-07-07, 2016-09-10 to 2016-09-12, 2016-09-24, 2016-12-18, 2017-02-18, 2017-06-25 to 2017-06-27.
- * JWM - 7 Days per week with no holidays: Mon-Sun 08:00-16:00.
- *APB - 6 D week + Qatar Holiday: Mon-Thu 08:00-16:00; Fri off; Sat-Sun 08:00-16:00. Exceptions (off unless hours are given): 2014-10-04 to 2014-10-06, 2014-12-18, 2015-02-10, 2015-07-15 to 2015-07-16, 2015-09-20 to 2015-09-21, 2015-10-17, 2015-10-24, 2015-12-02.
- * JWM - 5 Days per Week + Qatar Holidays: Mon-Thu 08:00-16:00; Fri off; Sat-Sun 08:00-16:00. Exceptions (off unless hours are given): 2014-10-04 to 2014-10-07, 2014-10-11, 2014-10-18, 2014-10-25, 2014-11-01, 2014-11-08, 2014-11-15, 2014-11-22, 2014-11-29, 2014-12-06, 2014-12-13, 2014-12-18, 2014-12-20, 2014-12-27, 2015-01-03, 2015-01-10, 2015-01-17, 2015-01-24, 2015-01-31, 2015-02-07, 2015-02-10, 2015-02-14, 2015-02-21, 2015-02-28, 2015-03-07, 2015-03-14, 2015-03-21, 2015-03-28, 2015-04-04, 2015-04-11, 2015-04-18, 2015-04-25, 2015-05-02, 2015-05-09, 2015-05-16, 2015-05-23, 2015-05-30, 2015-06-06, 2015-06-13, 2015-06-20, 2015-06-27, 2015-07-04, 2015-07-11, 2015-07-14 to 2015-07-16, 2015-07-18, 2015-07-25, 2015-08-01, 2015-08-08, 2015-08-15, 2015-08-22, 2015-08-29, 2015-09-05, 2015-09-12, 2015-09-19 to 2015-09-22, 2015-09-26, 2015-10-03, 2015-10-10, 2015-10-17, 2015-10-24, 2015-10-31, 2015-11-07, 2015-11-14, 2015-11-21, 2015-11-28, 2015-12-05, 2015-12-12, 2015-12-19 to 2015-12-20, 2015-12-26, 2016-01-02, 2016-01-09, 2016-01-16, 2016-01-23, 2016-01-30, 2016-02-06, 2016-02-10, 2016-02-13, 2016-02-20, 2016-02-27, 2016-03-05, 2016-03-12, 2016-03-19, 2016-03-26, 2016-04-02, 2016-04-09, 2016-04-16, 2016-04-23, 2016-04-30, 2016-05-07, 2016-05-14, 2016-05-21, 2016-05-28, 2016-06-04, 2016-06-11, 2016-06-18, 2016-06-25, 2016-07-02, 2016-07-05 to 2016-07-07, 2016-07-09, 2016-07-16, 2016-07-23, 2016-07-30, 2016-08-06, 2016-08-13, 2016-08-20, 2016-08-27, 2016-09-03, 2016-09-10 to 2016-09-12, 2016-09-17, 2016-09-24, 2016-10-01, 2016-10-08, 2016-10-15, 2016-10-22, 2016-10-29, 2016-11-05, 2016-11-12, 2016-11-19, 2016-11-26, 2016-12-03, 2016-12-10, 2016-12-17 to 2016-12-18, 2016-12-24, 2016-12-31, 2017-01-07, 2017-01-14, 2017-01-21, 2017-01-28, 2017-02-04, 2017-02-11, 2017-02-18 to 2017-02-19, 2017-02-25, 2017-03-04, 2017-03-11, 2017-03-18, 2017-03-25, 2017-04-01, 2017-04-08, 2017-04-15, 2017-04-22, 2017-04-29, 2017-05-06, 2017-05-13, 2017-05-20, 2017-05-27, 2017-06-03, 2017-06-10, 2017-06-17, 2017-06-24 to 2017-06-27, 2017-07-01.
- 7 Day Work: Mon-Sun 08:00-16:00.

## Resources

| Resource | Group |
| --- | --- |
| Shop Drawings Submittals | labor |
| Shop Drawings Approval | labor |
| Pre-qualification Submittals | labor |
| Pre-qualification Approval | labor |
| Method Statements Submittals | labor |
| Method Statements Approval | labor |
| Material Submittals | labor |
| Material Approval | labor |
| Purchase Order | labor |
| Lead Time & Delivery | labor |

## Schedule

| ID | WBS | Activity | Type | Duration | Start | Finish | Predecessors | Total float | Free float | Constraint | Calendar |
| --- | --- | --- | --- | --- | --- | --- | --- | --- | --- | --- | --- |
|  | G | **General** |  |  | 2014-09-16 | 2017-07-02 |  |  |  |  |  |
|  | 1 | **Client Deliverables** |  |  | 2014-09-16 | 2014-12-14 |  |  |  |  |  |
| G-CD-001 |  | Issue of DC2 including all stamped drawings by Authorities (Building Permit) | milestone | 0d | 2014-09-16 | 2014-09-16 | G-CM-014 | 0d |  |  |  |
| G-CD-006 |  | Enabling Works Completion certificate by Others | milestone | 0d | 2014-09-16 | 2014-09-16 | G-CM-001 FS-14d | 29d | 28d |  | *APB - 6 D week + Qatar Holiday |
| G-CD-002 |  | Issue IFC Drawings stamped by QCDD | milestone | 0d | 2014-10-02 | 2014-10-02 | G-CM-001 | 0d |  |  |  |
| G-CD-004 |  | Handover Lay Down Area | milestone | 0d | 2014-10-02 | 2014-10-02 | G-CM-001 | 15d | 14d |  |  |
| G-CD-005 |  | Handover Construction Site | milestone | 0d | 2014-10-02 | 2014-10-02 | G-CM-001 | 15d | 14d |  |  |
| G-CD-003 |  | Issue of Architectural & MEP IFC drawings from ground to roof | milestone | 0d | 2014-12-14 | 2014-12-14 | G-CM-001 FS+60d | 24d | 0d |  |  |
|  | M | **Milestones** |  |  | 2014-09-16 | 2017-07-02 |  |  |  |  |  |
|  | C | **Contract Milestones** |  |  | 2014-09-16 | 2017-07-02 |  |  |  |  |  |
| G-CM-014 |  | Notice to Proceed | milestone | 0d | 2014-09-16 | 2014-09-16 |  | 0d |  | start on 2014-09-16 |  |
| G-CM-001 |  | Commencement Date on Site | milestone | 0d | 2014-10-02 | 2014-10-02 | G-CD-001 FS+14d | 0d |  | start on 2014-10-02 |  |
| G-CM-002 |  | Completion of Superstructure | milestone | 0d | 2016-04-02 | 2016-04-02 | C-CS-S-L44-82, C-CS-Su-B-CW-1122, C-MEP-Em-552, C-CS-TR-351, C-CS-Su-A-S5-101, C-CS-Su-A-S8-191, C-CS-Su-A-GWT-411, C-SP-MRP-171, C-EX-G-002, C-CS-Su-R-003, C-CS-Su-SB-31, C-CS-Su-A-PR-003 | 0d |  | finish on 2016-04-02 |  |
| G-CM-003 |  | Completion of Facade | milestone | 0d | 2016-07-02 | 2016-07-02 | C-F-UP-301, C-F-NG4-281, C-F-NG4-441, C-F-NG4-601, C-F-NG4-761, G-CM-002, C-CS-S-A-ST-1652, C-CS-S-A-ST-1692, C-CS-S-A-ST-1732, C-CS-S-A-ST-1742 | 0d | 301d | finish on 2016-07-02 |  |
| G-CM-005 |  | Completion of Interior Fit-out | milestone | 0d | 2017-04-02 | 2017-04-02 | S-001 | 0d | 78d | finish on 2017-04-02 | *APB - 6 D week + Qatar Holiday |
| G-CM-004 |  | Initial Acceptance of the project | milestone | 0d | 2017-07-02 | 2017-07-02 | HO-001, G-CM-003, G-CM-005 | 0d |  |  |  |
|  | M | **Major Milestones** |  |  | 2014-12-14 | 2017-02-16 |  |  |  |  |  |
| G-MM-002 |  | Completion of all Contractor Deliverables | milestone | 0d | 2014-12-14 | 2014-12-14 | G-CoD-002, G-CoD-003, G-CoD-005, G-CoD-006 | 3d |  |  |  |
| G-MM-004 |  | Mockup FInal Approval | milestone | 0d | 2015-05-07 | 2015-05-07 | A10210 | 107d | 0d |  | *APB - 6 D week + Qatar Holiday |
| G-MM-003 |  | Activation of Permanent Power | milestone | 0d | 2016-09-19 | 2016-09-19 | G-AI-KE-005 | 0d |  |  | *APB - 6 D week + Qatar Holiday |
| G-MM-005 |  | Activation of Potable Water Supply | milestone | 0d | 2017-02-06 | 2017-02-06 | G-AI-KW-004 | 31d | 16d |  |  |
| G-MM-006 |  | Activation of Drainage External Network | milestone | 0d | 2017-02-06 | 2017-02-06 | G-AI-AD-004 | 31d | 16d |  |  |
| G-MM-001 |  | Activation of Wild Air | milestone | 0d | 2017-02-16 | 2017-02-16 | C-UR-PR-2491, C-UR-PR-2531, C-UR-PR-2561, G-AI-QC-004 | 22d | 0d |  |  |
|  | 2 | **Contractor Deliverables** |  |  | 2014-11-10 | 2014-12-14 |  |  |  |  |  |
| G-CoD-005 |  | QA/QC Plan | milestone | 0d | 2014-11-10 | 2014-11-10 | G-CM-001 FS+30d | 33d | 30d |  |  |
| G-CoD-003 |  | HSE Plan Manual | milestone | 0d | 2014-11-27 | 2014-11-27 | G-CM-001 FS+45d | 18d | 15d |  |  |
| G-CoD-006 |  | List of Submittal | milestone | 0d | 2014-11-27 | 2014-11-27 | G-CM-001 FS+45d | 18d | 15d |  |  |
| G-CoD-002 |  | Insurance Certificates | milestone | 0d | 2014-12-14 | 2014-12-14 | G-CM-001 FS+60d | 3d | 0d |  |  |

| ID | WBS | Activity | Type | Duration | Start | Finish | Predecessors | Total float | Free float | Calendar | Cost |
| --- | --- | --- | --- | --- | --- | --- | --- | --- | --- | --- | --- |
|  | 3 | **Preliminaries** |  |  | 2014-10-02 | 2017-07-02 |  |  |  |  |  |
| G-P-001 |  | Preliminaries | level of effort | 1005d | 2014-10-02 | 2017-07-02 | G-CM-001 | 0d |  | 7 Day Work | 46,096,769.71 |
|  | 4 | **Authorities Coordination / Approvals** |  |  | 2014-12-09 | 2017-05-30 |  |  |  |  |  |
|  | 2 | **Material Submittals & Approval by Authorities** |  |  | 2014-12-09 | 2015-07-06 |  |  |  |  |  |
|  | 1 | **Kahramaa (Electricity Department)** |  |  | 2014-12-09 | 2015-02-05 |  |  |  |  |  |
| G-A-M-KE-001 |  | Prepare & Submit the proposed material of the transformers, HV Panels & MV panels |  | 14d | 2014-12-09 | 2014-12-29 | P-MEP-E-4943, P-MEP-E-5063, P-MEP-E-5103, G-CD-001 | 120d | 0d | * JWM - 5 Days per Week + Qatar Holidays | 101,051.22 |
| G-A-M-KE-002 |  | Kahramaa review, comments & Approval |  | 14d | 2014-12-30 | 2015-01-18 | G-A-M-KE-001 | 120d | 0d | * JWM - 5 Days per Week + Qatar Holidays | 101,051.22 |
| G-A-M-KE-003 |  | Receive final Approval on Transformer, HV Panels & MV Panels |  | 14d | 2015-01-19 | 2015-02-05 | G-A-M-KE-002 | 120d | 0d | * JWM - 5 Days per Week + Qatar Holidays | 101,051.22 |
|  | 5 | **Qatar Cool** |  |  | 2015-02-22 | 2015-04-20 |  |  |  |  |  |
| G-A-M-QC-001 |  | Prepare & Submit the proposed material of the AHU's, FCU's, CW Pumps & Heat Exchangers |  | 14d | 2015-02-22 | 2015-03-11 | P-MEP-AC-3903, P-MEP-AC-3943, P-MEP-AC-4143, P-MEP-AC-4183, G-CD-001 | 76d | 0d | * JWM - 5 Days per Week + Qatar Holidays |  |
| G-A-M-QC-002 |  | Qatar Cool review, comments & Approval |  | 14d | 2015-03-12 | 2015-03-31 | G-A-M-QC-001 | 76d | 0d | * JWM - 5 Days per Week + Qatar Holidays |  |
| G-A-M-QC-003 |  | Receive final Approval on AHU's, FCU's, CW pumps & Heat Exchagers |  | 14d | 2015-04-01 | 2015-04-20 | G-A-M-QC-002 | 76d | 0d | * JWM - 5 Days per Week + Qatar Holidays |  |
|  | 2 | **Woqood** |  |  | 2015-05-10 | 2015-07-06 |  |  |  |  |  |
| G-A-M-W-001 |  | Prepare & Submit the proposed material of Gas & Fuel Tanks |  | 14d | 2015-05-10 | 2015-05-27 | P-MEP-P-5063, P-MEP-P-5103, P-MEP-P-5143, P-MEP-P-5183, P-MEP-P-5223, G-CD-001, P-MEP-E-5383, P-MEP-E-5343 | 92d | 0d | * JWM - 5 Days per Week + Qatar Holidays |  |
| G-A-M-W-002 |  | Woqqod review, comments & Approval |  | 14d | 2015-05-28 | 2015-06-16 | G-A-M-W-001 | 92d | 0d | * JWM - 5 Days per Week + Qatar Holidays |  |
| G-A-M-W-003 |  | Receive final Approval on Gas & Fuel Tanks |  | 14d | 2015-06-17 | 2015-07-06 | G-A-M-W-002 | 92d | 0d | * JWM - 5 Days per Week + Qatar Holidays |  |
|  | 3 | **Civil Aviation** |  |  | 2015-02-22 | 2015-04-20 |  |  |  |  |  |
| G-A-M-CA-001 |  | Prepare & Submit the proposed material of Aircraft warning lights |  | 14d | 2015-02-22 | 2015-03-11 | G-CD-001, G-A-M-QC-001 SS | 340d | 0d | * JWM - 5 Days per Week + Qatar Holidays |  |
| G-A-M-CA-002 |  | Civil Aviation review, comments & Approval |  | 14d | 2015-03-12 | 2015-03-31 | G-A-M-CA-001 | 340d | 0d | * JWM - 5 Days per Week + Qatar Holidays |  |
| G-A-M-CA-003 |  | Receive final Approval on Aircraft warning lights |  | 14d | 2015-04-01 | 2015-04-20 | G-A-M-CA-002 | 340d | 23d | * JWM - 5 Days per Week + Qatar Holidays |  |
|  | 1 | **Authorities Inspection for completed Works** |  |  | 2016-03-06 | 2017-05-30 |  |  |  |  |  |
|  | 6 | **Municipality of Doha** |  |  | 2017-04-26 | 2017-05-30 |  |  |  |  |  |
| G-AI-MD-001 |  | Submit all certifications of the completed works (All Authorities) |  | 7d | 2017-04-26 | 2017-05-04 | G-AI-CD-003, G-AI-KE-003, G-AI-KW-003, G-AI-OV-003, G-AI-AD-003, G-AI-AR-003, G-AI-QC-003, G-AI-W-003 | 0d |  | * JWM - 5 Days per Week + Qatar Holidays |  |
| G-AI-MD-002 |  | Municipality review & Approval of the certifications of all Authorities |  | 14d | 2017-05-07 | 2017-05-24 | G-AI-MD-001 | 0d |  | * JWM - 5 Days per Week + Qatar Holidays |  |
| G-AI-MD-003 |  | Complete Certification by Municipality of the project |  | 4d | 2017-05-25 | 2017-05-30 | G-AI-MD-002 | 0d |  | * JWM - 5 Days per Week + Qatar Holidays |  |

Notes:
- G-P-001: Expenses: P 46096770
- G-A-M-KE-001: Expenses: 1 101051
- G-A-M-KE-002: Expenses: 1 101051
- G-A-M-KE-003: Expenses: 1 101051

| ID | WBS | Activity | Duration | Start | Finish | Predecessors | Total float | Free float | Calendar | Cost |
| --- | --- | --- | --- | --- | --- | --- | --- | --- | --- | --- |
|  | 4 | **Civil Defense** |  | 2017-02-27 | 2017-04-02 |  |  |  |  |  |
| G-AI-CD-001 |  | Prepare & Submit Inspection request by the Contractor signed by the Consultant & Client | 7d | 2017-02-27 | 2017-03-07 | C-UR-PR-3021, TC-FF-001 SS | 17d | 0d | * JWM - 5 Days per Week + Qatar Holidays |  |
| G-AI-CD-002 |  | Civil Defense inspection comments & Approval | 14d | 2017-03-08 | 2017-03-27 | G-AI-CD-001 | 17d | 0d | * JWM - 5 Days per Week + Qatar Holidays |  |
| G-AI-CD-003 |  | Receive final Approval on completed works | 4d | 2017-03-28 | 2017-04-02 | G-AI-CD-002 | 17d |  | * JWM - 5 Days per Week + Qatar Holidays |  |
|  | 1 | **Kahramaa (Electricity Department)** |  | 2016-07-25 | 2016-09-19 |  |  |  |  |  |
| G-AI-KE-001 |  | Prepare & Submit Inspection request by the Contractor signed by the Consultant & Client | 7d | 2016-07-25 | 2016-08-02 | C-UR-PR-2421, C-UR-PR-2441, C-UR-PR-2431, A1360, A1780, A1430, A1500, A1640, A1290, A1570, A1710, A1920, A2340, A1990, A2060, A2200, A1850, A2130, A2270, A2480, A2900, A2620, A2550, A2760, A2410, A2690, A2830, A3040, A3460, A3110, A3180, A3320, A2970, A3250, A3390, A3670, A3530, A3600, A3740, A3880, A4300, A3950, A4020, A4160, A3810, A4090, A4230, A4440, A4580, A4510, A4650, A4790 SS+14d, A5000 SS+14d, A4370, A11210, A11280 | 0d |  | * JWM - 5 Days per Week + Qatar Holidays | 101,051.22 |
| G-AI-KE-002 |  | Kahramaa (Electricity Department) inspection comments & Approval | 14d | 2016-08-03 | 2016-08-22 | G-AI-KE-001 | 0d |  | * JWM - 5 Days per Week + Qatar Holidays | 101,051.22 |
| G-AI-KE-003 |  | Receive final Approval on completed works | 4d | 2016-08-23 | 2016-08-28 | G-AI-KE-002 | 0d |  | * JWM - 5 Days per Week + Qatar Holidays | 101,051.22 |
| G-AI-KE-004 |  | Tie In to Electrical main Network | 7d | 2016-08-29 | 2016-09-06 | G-AI-KE-003 | 0d |  | * JWM - 5 Days per Week + Qatar Holidays | 101,051.22 |
| G-AI-KE-005 |  | Kahramaa Energization and paying Kahramaa Fees | 7d | 2016-09-07 | 2016-09-19 | G-AI-KE-004 | 0d |  | * JWM - 5 Days per Week + Qatar Holidays | 1,313,665.83 |
|  | 8 | **Kahramma (Water Department)** |  | 2016-12-13 | 2017-02-06 |  |  |  |  |  |
| G-AI-KW-001 |  | Prepare & Submit Inspection request by the Contractor signed by the Consultant & Client | 7d | 2016-12-13 | 2016-12-22 | C-UR-PR-2711, C-UR-PR-2761, C-UR-PR-3211, A1380, A1800, A1450, A1520, A1660, A1310, A1590, A1730, A1940, A2360, A2010, A2080, A2220, A1870, A2150, A2290, A2500, A2640, A2570, A2780, A2430, A2710, A2850, A3060, A3480, A3130, A3200, A3340, A2990, A3270, A3410, A3690, A3550, A3620, A3760, A3900, A3970, A4040, A4180, A3830, A4110, A4250, A4460, A4880, A4600, A4530, A4740, A4390, A4670, A4810, A4950, A5020 | 26d | 0d | * JWM - 5 Days per Week + Qatar Holidays |  |
| G-AI-KW-002 |  | Kahramma (Water Department) inspection comments & Approval | 14d | 2016-12-25 | 2017-01-11 | G-AI-KW-001 | 26d | 0d | * JWM - 5 Days per Week + Qatar Holidays |  |
| G-AI-KW-003 |  | Receive final Approval on completed works | 4d | 2017-01-12 | 2017-01-17 | G-AI-KW-002 | 26d | 0d | * JWM - 5 Days per Week + Qatar Holidays |  |
| G-AI-KW-004 |  | Tie In to Water main Network | 14d | 2017-01-18 | 2017-02-06 | G-AI-KW-003 | 26d | 0d | * JWM - 5 Days per Week + Qatar Holidays | 5,467.3 |
|  | 9 | **Oreedo / Vodafone** |  | 2017-01-16 | 2017-02-20 |  |  |  |  |  |
| G-AI-OV-001 |  | Prepare & Submit Inspection request by the Contractor signed by the Consultant & Client | 7d | 2017-01-16 | 2017-01-24 | A1410, A1830, A1480, A1550, A1690, A1340, A1620, A1760, A1970, A2390, A2040, A2110, A2250, A1900, A2180, A2320, A2530, A2950, A2670, A2600, A2810, A2460, A2740, A2880, A3090, A3510, A3160, A3230, A3370, A3020, A3300, A3440, A3720, A3580, A3650, A3790, A3930, A4350, A4000, A4070, A4210, A3860, A4140, A4280, A4490, A4910, A4630, A4560, A4770, A4420, A4700, A4840, A4980, A5050 | 46d | 0d | * JWM - 5 Days per Week + Qatar Holidays |  |
| G-AI-OV-002 |  | Oreedo / Vodafone inspection comments & Approval | 14d | 2017-01-25 | 2017-02-13 | G-AI-OV-001 | 46d | 0d | * JWM - 5 Days per Week + Qatar Holidays |  |
| G-AI-OV-003 |  | Receive final Approval on completed works | 4d | 2017-02-14 | 2017-02-20 | G-AI-OV-002 | 46d |  | * JWM - 5 Days per Week + Qatar Holidays |  |
|  | 2 | **Ashgal (Drainage department)** |  | 2016-12-13 | 2017-02-06 |  |  |  |  |  |
| G-AI-AD-001 |  | Prepare & Submit Inspection request by the Contractor signed by the Consultant & Client | 7d | 2016-12-13 | 2016-12-22 | C-PW-CT-001 SS, C-UR-PR-2801, A1380, A1800, A1450, A1520, A1660, A1310, A1590, A1730, A1940, A2360, A2010, A2080, A2220, A1870, A2150, A2290, A2500, A2920, A2640, A2570, A2780, A2430, A2710, A2850, A3060, A3480, A3130, A3200, A3340, A2990, A3270, A3410, A3690, A3550, A3620, A3760, A3900, A4320, A3970, A4040, A4180, A3830, A4110, A4250, A4460, A4880, A4600, A4530, A4740, A4390, A4670, A4810, A4950, A5020 | 26d | 0d | * JWM - 5 Days per Week + Qatar Holidays |  |
| G-AI-AD-002 |  | Ashgal Drainage department) inspection comments & Approval | 14d | 2016-12-25 | 2017-01-11 | G-AI-AD-001 | 26d | 0d | * JWM - 5 Days per Week + Qatar Holidays |  |
| G-AI-AD-003 |  | Receive final Approval on completed works | 4d | 2017-01-12 | 2017-01-17 | G-AI-AD-002 | 26d | 0d | * JWM - 5 Days per Week + Qatar Holidays |  |
| G-AI-AD-004 |  | Tie-in to Ashgal Drainage Network | 14d | 2017-01-18 | 2017-02-06 | G-AI-AD-003 | 26d | 0d | * JWM - 5 Days per Week + Qatar Holidays |  |

Notes:
- G-AI-KE-001: Expenses: 1 101051
- G-AI-KE-002: Expenses: 1 101051
- G-AI-KE-003: Expenses: 1 101051
- G-AI-KE-004: Expenses: 1 101051
- G-AI-KE-005: Expenses: 1 1313666
- G-AI-KW-004: Expenses: 1 5467.3

| ID | WBS | Activity | Duration | Start | Finish | Predecessors | Total float | Free float | Calendar |
| --- | --- | --- | --- | --- | --- | --- | --- | --- | --- |
|  | 7 | **Ashgal (Road department)** |  | 2017-03-22 | 2017-04-25 |  |  |  |  |
| G-AI-AR-001 |  | Prepare & Submit Inspection request by the Contractor signed by the Consultant & Client | 7d | 2017-03-22 | 2017-03-30 | C-EX-R-004, C-EX-R-005, C-EX-R-003 | 0d |  | * JWM - 5 Days per Week + Qatar Holidays |
| G-AI-AR-002 |  | Ashgal (Road department) inspection comments & Approval | 14d | 2017-04-02 | 2017-04-19 | G-AI-AR-001 | 0d |  | * JWM - 5 Days per Week + Qatar Holidays |
| G-AI-AR-003 |  | Receive final Approval on completed works | 4d | 2017-04-20 | 2017-04-25 | G-AI-AR-002 | 0d |  | * JWM - 5 Days per Week + Qatar Holidays |
|  | 5 | **Qatar Cool** |  | 2017-01-04 | 2017-02-16 |  |  |  |  |
| G-AI-QC-001 |  | Prepare & Submit Inspection request by the Contractor signed by the Consultant & Client | 7d | 2017-01-04 | 2017-01-12 | C-UR-PR-2491, C-UR-PR-2531, C-UR-PR-2561, C-UR-PR-2651, A1370, A1790, A1440, A1510, A1650, A1300, A1580, A1720, A1930, A2350, A2000, A2070, A2210, A1860, A2140, A2280, A2490, A2910, A2630, A2560, A2770, A2420, A2700, A2840, A3050, A3470, A3120, A3190, A3330, A2980, A3260, A3400, A3680, A3540, A3610, A3750, A3890, A4310, A3960, A4030, A4170, A3820, A4100, A4240, A4450, A4870, A4590, A4520, A4730, A4380, A4660, A4800, A4940, A5010 | 18d | 0d | * JWM - 5 Days per Week + Qatar Holidays |
| G-AI-QC-002 |  | Qatar Cool inspection comments & Approval | 14d | 2017-01-15 | 2017-02-01 | G-AI-QC-001 | 18d | 0d | * JWM - 5 Days per Week + Qatar Holidays |
| G-AI-QC-003 |  | Receive final Approval on completed works | 4d | 2017-02-02 | 2017-02-07 | G-AI-QC-002 | 18d | 0d | * JWM - 5 Days per Week + Qatar Holidays |
| G-AI-QC-004 |  | Tie-in to Qatar Cool CW main network and activation of wild air | 7d | 2017-02-08 | 2017-02-16 | G-AI-QC-003 | 18d | 0d | * JWM - 5 Days per Week + Qatar Holidays |
|  | 3 | **Woqood** |  | 2016-03-06 | 2016-04-21 |  |  |  |  |
| G-AI-W-001 |  | Prepare & Submit Inspection request by the Contractor signed by the Consultant & Client | 7d | 2016-03-06 | 2016-03-14 | C-UR-PR-3051, C-UR-PR-3241 | 256d | 0d | * JWM - 5 Days per Week + Qatar Holidays |
| G-AI-W-002 |  | Woqood inspection comments & Approval | 14d | 2016-03-15 | 2016-04-03 | G-AI-W-001 | 256d | 0d | * JWM - 5 Days per Week + Qatar Holidays |
| G-AI-W-003 |  | Receive final Approval on completed works | 14d | 2016-04-04 | 2016-04-21 | G-AI-W-002 | 256d |  | * JWM - 5 Days per Week + Qatar Holidays |
|  | 3 | **Mobilization** |  | 2014-09-16 | 2016-11-05 |  |  |  |  |
|  | 1 | **Major Equipments** |  | 2014-10-30 | 2016-09-22 |  |  |  |  |
| M-ME-001 |  | Mobilization & Installation of Tower Crane # 1 | 14d | 2014-10-30 | 2014-11-15 | C-CS-Su-001 | 13d | 10d |  |
| M-ME-1 |  | Mobilization & Installation of Tower Crane # 2 | 14d | 2014-10-30 | 2014-11-15 | C-CS-Su-001 | 13d | 11d |  |
| M-ME-11 |  | Mobilization & Installation of Tower Crane # 3 | 14d | 2014-11-20 | 2014-12-06 | C-CS-Su-B-001 | 133d | 32d |  |
| M-ME-51 |  | Mobilization & Installation Of Hoist # 1 | 25d | 2015-03-25 | 2015-04-22 | C-CS-S-L5-62 | 10d |  |  |
| M-ME-61 |  | Mobilization & Installation Of Hoist # 2 | 25d | 2015-05-05 | 2015-06-02 | C-CS-S-L10-62 | 10d |  |  |
| M-ME-41 |  | Dismantling of Tower Crane # 3 | 25d | 2016-01-31 | 2016-02-29 | C-EX-G-002, C-UR-PR-51, C-UR-PR-131, C-UR-PR-291, C-UR-PR-371, C-UR-PR-451, C-UR-PR-531, C-UR-PR-611, C-UR-PR-691, C-UR-PR-771, C-UR-PR-2201, C-UR-PR-2321, C-UR-PR-1411, C-UR-PR-1651, C-UR-PR-2051, C-UR-PR-1011, C-UR-PR-1491, C-UR-PR-1251, C-UR-PR-1171, C-UR-PR-1091, C-UR-PR-1571 | 277d | 227d |  |
| M-ME-81 |  | Dismantling of Hoist # 1 | 25d | 2016-07-14 | 2016-08-11 | C-F-CF-2757, C-F-CF-2747 | 37d | 26d |  |
| M-ME-21 |  | Dismantling of Tower Crane # 1 | 25d | 2016-08-14 | 2016-09-14 | C-SS-RCS-414, C-LH-L-645, C-LH-L-535, C-SL-L-175, C-HH-L-25, C-HA-L-75, C-LH-L-003, C-LH-L-675, C-LH-L-685 | 11d | 0d |  |
| M-ME-31 |  | Dismantling of Tower Crane # 2 | 25d | 2016-08-20 | 2016-09-20 | C-SS-RCS-414, C-LH-L-535, C-LH-L-645, C-LH-L-003, C-HA-L-75, C-HH-L-25, C-AH-L-125, C-SL-L-165, C-LH-L-675, C-LH-L-685 | 20d | 2d |  |
| M-ME-71 |  | Dismantling of Hoist # 2 | 25d | 2016-08-22 | 2016-09-22 | C-F-CF-3667 SS, C-F-CF-3657 SS | 18d | 0d |  |

| ID | WBS | Activity | Duration | Start | Finish | Predecessors | Total float | Free float | Calendar | Resources |
| --- | --- | --- | --- | --- | --- | --- | --- | --- | --- | --- |
|  | 2 | **Temporary Facilities** |  | 2014-09-16 | 2016-11-05 |  |  |  |  |  |
| M-TF-013 |  | Mobilization of Portocabins & site construction team | 27d | 2014-09-16 | 2014-10-20 | G-CM-014 | 7d | 6d | *APB - 6 D week + Qatar Holiday |  |
| M-TF-003 |  | Removal of the storage Areas from Basement | 5d | 2015-11-07 | 2015-11-11 | C-F-P-693 | 6d | 0d | *APB - 6 D week + Qatar Holiday |  |
| M-TF-001 |  | Dismatling of Temporary Facilities | 15d | 2016-09-20 | 2016-10-06 | G-MM-003 | 0d |  | *APB - 6 D week + Qatar Holiday |  |
| M-TF-002 |  | Installation of Interior Finishes Affected by the Temporary Facilities | 25d | 2016-10-08 | 2016-11-05 | M-TF-001 | 37d | 0d | *APB - 6 D week + Qatar Holiday |  |
|  | 4 | **Definite Sum Works** |  | 2014-08-31 | 2017-05-23 |  |  |  |  |  |
|  | 4 | **Pre-qualification** |  | 2014-08-31 | 2015-09-03 |  |  |  |  |  |
|  | 1 | **Civil/Structural** |  | 2014-10-02 | 2015-03-01 |  |  |  |  |  |
|  | 1 | **Concrete Supplier** |  | 2014-10-02 | 2014-10-28 |  |  |  |  |  |
| DS-C-PQ-CS-001 |  | Tender/Award & Submit Prequalification for Concrete suppliers | 10d | 2014-10-02 | 2014-10-16 | G-CM-001 | 0d |  |  | Pre-qualification Submittals [60 h] |
| DS-C-PQ-CS-002 |  | Pre-qualification Review & Approval of Concrete suppliers | 10d | 2014-10-18 | 2014-10-28 | DS-C-PQ-CS-001 | 0d |  |  | Pre-qualification Approval [40 h] |
|  | 2 | **Steel Rebar Supplier** |  | 2014-10-02 | 2014-10-21 |  |  |  |  |  |
| DS-C-PQ-CS-003 |  | Tender/Award & Submit Prequalification for Steel Rebar suppliers | 4d | 2014-10-02 | 2014-10-09 | G-CM-001, G-CD-002 | 0d |  |  | Pre-qualification Submittals [60 h] |
| PQ-CS-C-12 |  | Pre-qualification Review & Approval of Steel Rebar suppliers | 10d | 2014-10-11 | 2014-10-21 | DS-C-PQ-CS-003 | 0d |  |  | Pre-qualification Approval [40 h] |
|  | 3 | **Pilling Subcontractor** |  | 2014-10-02 | 2014-10-28 |  |  |  |  |  |
| PQ-CS-C-22 |  | Tender/Award & Submit Prequalification for Piling Subcontractor | 10d | 2014-10-02 | 2014-10-16 | G-CM-001 | 0d |  |  | Pre-qualification Submittals [60 h] |
| PQ-CS-C-32 |  | Pre-qualification Review & Approval of Piling Subcontractor | 10d | 2014-10-18 | 2014-10-28 | PQ-CS-C-22 | 0d |  |  | Pre-qualification Approval [40 h] |
|  | 6 | **Post tension Subcontractor** |  | 2014-10-11 | 2014-11-11 |  |  |  |  |  |
| PQ-CS-C-2242 |  | Tender/Award & Submit Prequalification for Post Tension Subcontractor | 14d | 2014-10-11 | 2014-10-26 | DS-C-PQ-CS-003 | 25d | 0d |  | Pre-qualification Submittals [60 h] |
| PQ-CS-C-2252 |  | Pre-qualification Review & Approval of Post TensionSubcontractor | 14d | 2014-10-27 | 2014-11-11 | PQ-CS-C-2242 | 25d | 0d |  | Pre-qualification Approval [40 h] |
|  | 4 | **Dewatering Subcontractor** |  | 2014-10-02 | 2014-10-25 |  |  |  |  |  |
| PQ-CS-C-42 |  | Tender/Award & Submit Prequalification forDewatering Subcontractor | 7d | 2014-10-02 | 2014-10-13 | G-CM-001 | 1d | 0d |  | Pre-qualification Submittals [60 h] |
| PQ-CS-C-52 |  | Pre-qualification Review & Approvall of Dewatering Subcontractor | 10d | 2014-10-14 | 2014-10-25 | PQ-CS-C-42 | 1d | 0d |  | Pre-qualification Approval [40 h] |
|  | 5 | **Block Work Supplier** |  | 2014-10-11 | 2014-11-30 |  |  |  |  |  |
| PQ-CS-C-62 |  | Tender/Award & Submit Prequalification for Block Work Supplier | 30d | 2014-10-11 | 2014-11-13 | DS-C-PQ-CS-003 | 17d | 0d |  | Pre-qualification Submittals [60 h] |
| PQ-CS-C-72 |  | Pre-qualification Review & Approval of Block Work Supplier | 30d | 2014-10-27 | 2014-11-30 | PQ-CS-C-62 SS+14d, PQ-CS-C-62 FF+14d | 17d | 0d |  | Pre-qualification Approval [40 h] |

| ID | WBS | Activity | Duration | Start | Finish | Predecessors | Total float | Free float | Resources | Cost |
| --- | --- | --- | --- | --- | --- | --- | --- | --- | --- | --- |
|  | 7 | **Fire proofing Supplier** |  | 2014-12-08 | 2015-03-01 |  |  |  |  |  |
| PQ-CS-C-362 |  | Tender/Award & Submit Prequalification for Fire Proofing Supplier | 30d | 2014-12-08 | 2015-01-12 | PQ-CS-C-62 FS+20d | 169d | 0d | Pre-qualification Submittals [60 h] | 13,282.31 |
| PQ-CS-C-372 |  | Pre-qualification Review & Approval of Fire Proofing Supplier | 30d | 2015-01-25 | 2015-03-01 | PQ-CS-C-362 FS+10d | 169d | 0d | Pre-qualification Approval [40 h] | 13,282.31 |
|  | 6 | **Structural Steel Subcontractor** |  | 2014-10-02 | 2014-11-02 |  |  |  |  |  |
| PQ-CS-C-82 |  | Tender/Award & Submit Prequalification forStructural Steel Subcontractor | 14d | 2014-10-02 | 2014-10-21 | G-CM-001 | 1d | 0d | Pre-qualification Submittals [60 h] |  |
| PQ-CS-C-92 |  | Pre-qualification Review & Approval of Structural Steel Subcontractor | 14d | 2014-10-18 | 2014-11-02 | PQ-CS-C-82 SS+10d, PQ-CS-C-82 FF+10d | 1d | 0d | Pre-qualification Approval [40 h] |  |
|  | 9 | **Facade Subcontractor** |  | 2014-10-02 | 2014-12-08 |  |  |  |  |  |
| PQ-CS-C-742 |  | Tender/Award & Submit Prequalification for Facade Subcontractor | 45d | 2014-10-02 | 2014-11-26 | G-CD-002 | 5d | 0d | Pre-qualification Submittals [60 h] |  |
| PQ-CS-C-752 |  | Pre-qualification Review & Approval of Facade Subcontractor | 14d | 2014-11-23 | 2014-12-08 | PQ-CS-C-742 SS+10d, PQ-CS-C-742 FF+10d | 5d | 0d | Pre-qualification Approval [40 h] |  |
|  | 2 | **MEP** |  | 2014-08-31 | 2015-02-02 |  |  |  |  |  |
|  | 1 | **Embeded Items from Basement 1 to Basement 3** |  | 2014-10-02 | 2014-11-02 |  |  |  |  |  |
| PQ-CS-C-402 |  | Tender/Award & Submit Prequalification for MEP Embeded Items B3 to B1 Subcontractor | 14d | 2014-10-02 | 2014-10-21 | G-CD-002 | 2d | 0d | Pre-qualification Submittals [60 h] |  |
| PQ-CS-C-412 |  | Pre-qualification Review & Approval of MEP Embeded Items B3 to B1 Subcontractor | 14d | 2014-10-18 | 2014-11-02 | PQ-CS-C-402 SS+10d, PQ-CS-C-402 FF+10d | 2d | 0d | Pre-qualification Approval [40 h] |  |
|  | 2 | **Plumbing & Drainage Works** |  | 2014-08-31 | 2014-10-13 |  |  |  |  |  |
| PQ-CS-C-422 |  | Tender/Award & Submit Prequalification for Plumbing & Drainage Subcontractor | 25d | 2014-08-31 | 2014-09-28 |  | 91d | 0d | Pre-qualification Submittals [60 h] |  |
| PQ-CS-C-432 |  | Pre-qualification Review & Approval of Plumbing & Drainage Subcontractor | 25d | 2014-09-11 | 2014-10-13 | PQ-CS-C-422 SS+10d, PQ-CS-C-422 FF+10d | 92d | 0d | Pre-qualification Approval [40 h] |  |
|  | 3 | **HVAC Works** |  | 2014-09-29 | 2014-11-17 |  |  |  |  |  |
| PQ-CS-C-442 |  | Tender/Award & Submit Prequalification for HVAC Subcontractor | 30d | 2014-09-29 | 2014-11-05 | PQ-CS-C-422 | 91d | 0d | Pre-qualification Submittals [60 h] |  |
| PQ-CS-C-452 |  | Pre-qualification Review & Approval of HVAC Subcontractor | 30d | 2014-10-14 | 2014-11-17 | PQ-CS-C-442 SS+10d, PQ-CS-C-442 FF+10d | 91d | 0d | Pre-qualification Approval [40 h] |  |
|  | 4 | **Electrical Works** |  | 2014-08-31 | 2014-10-19 |  |  |  |  |  |
| PQ-CS-C-462 |  | Tender/Award & Submit Prequalification for Electrical Subcontractor | 30d | 2014-08-31 | 2014-10-07 |  | 93d | 0d | Pre-qualification Submittals [60 h] |  |
| PQ-CS-C-472 |  | Pre-qualification Review & Approval of Electrical Subcontractor | 30d | 2014-09-11 | 2014-10-19 | PQ-CS-C-462 SS+10d, PQ-CS-C-462 FF+10d | 109d | 0d | Pre-qualification Approval [40 h] |  |
|  | 5 | **ELV works** |  | 2014-10-08 | 2014-11-23 |  |  |  |  |  |
| PQ-CS-C-482 |  | Tender/Award & Submit Prequalification for ELV Subcontractor | 30d | 2014-10-08 | 2014-11-11 | PQ-CS-C-462 | 93d | 0d | Pre-qualification Submittals [60 h] |  |
| PQ-CS-C-492 |  | Pre-qualification Review & Approval of ELV Subcontractor | 30d | 2014-10-20 | 2014-11-23 | PQ-CS-C-482 SS+10d, PQ-CS-C-482 FF+10d | 93d | 0d | Pre-qualification Approval [40 h] |  |

Notes:
- PQ-CS-C-362: Expenses: FP 13282.3
- PQ-CS-C-372: Expenses: FP 13282.3

| ID | WBS | Activity | Duration | Start | Finish | Predecessors | Total float | Free float | Resources |
| --- | --- | --- | --- | --- | --- | --- | --- | --- | --- |
|  | 6 | **BMS - Building Management System** |  | 2014-11-12 | 2014-12-29 |  |  |  |  |
| PQ-CS-C-502 |  | Tender/Award & Submit Prequalification for BMS Subcontractor | 30d | 2014-11-12 | 2014-12-16 | PQ-CS-C-482 | 102d | 0d | Pre-qualification Submittals [60 h] |
| PQ-CS-C-512 |  | Pre-qualification Review & Approval of BMS Subcontractor | 30d | 2014-11-24 | 2014-12-29 | PQ-CS-C-502 SS+10d, PQ-CS-C-502 FF+10d | 102d | 0d | Pre-qualification Approval [40 h] |
|  | 7 | **Gas Installation** |  | 2014-12-17 | 2015-02-02 |  |  |  |  |
| PQ-CS-C-522 |  | Tender/Award & Submit Prequalification for Gas Subcontractor | 30d | 2014-12-17 | 2015-01-21 | PQ-CS-C-502 | 113d | 0d | Pre-qualification Submittals [60 h] |
| PQ-CS-C-532 |  | Pre-qualification Review & Approval of Gas Subcontractor | 30d | 2014-12-30 | 2015-02-02 | PQ-CS-C-522 SS+10d, PQ-CS-C-522 FF+10d | 113d | 0d | Pre-qualification Approval [40 h] |
|  | 3 | **Architectural / Finishes** |  | 2014-08-31 | 2015-09-03 |  |  |  |  |
|  | 1 | **Gypsum Board Partition & Ceiling** |  | 2014-08-31 | 2014-10-19 |  |  |  |  |
| PQ-CS-C-762 |  | Tender/Award & Submit Prequalification for Gypsum Board Partition & Ceiling Subcontractor | 30d | 2014-08-31 | 2014-10-07 |  | 88d | 0d | Pre-qualification Submittals [60 h] |
| PQ-CS-C-772 |  | Pre-qualification Review & Approval of Gypsum Board Partition & Ceiling Subcontractor | 30d | 2014-09-11 | 2014-10-19 | PQ-CS-C-762 SS+10d, PQ-CS-C-762 FF+10d | 112d | 0d | Pre-qualification Approval [40 h] |
|  | 22 | **Smoke Curtain** |  | 2014-10-20 | 2014-12-04 |  |  |  |  |
| PQ-CS-C-1122 |  | Tender/Award & Submit Prequalification for Smoke Curtain Subcontractor | 30d | 2014-10-20 | 2014-11-23 | PQ-CS-C-772 | 132d | 0d | Pre-qualification Submittals [60 h] |
| PQ-CS-C-1132 |  | Pre-qualification Review & Approval of Smoke Curtain Subcontractor | 30d | 2014-11-01 | 2014-12-04 | PQ-CS-C-1122 SS+10d, PQ-CS-C-1122 FF+10d | 154d | 0d | Pre-qualification Approval [40 h] |
|  | 14 | **Cement Board** |  | 2014-11-24 | 2015-01-10 |  |  |  |  |
| PQ-CS-C-782 |  | Tender/Award & Submit Prequalification for Cement Board Subcontractor | 30d | 2014-11-24 | 2014-12-29 | PQ-CS-C-1122 | 132d | 0d | Pre-qualification Submittals [60 h] |
| PQ-CS-C-792 |  | Pre-qualification Review & Approval of Cement Board Subcontractor | 30d | 2014-12-06 | 2015-01-10 | PQ-CS-C-782 SS+10d, PQ-CS-C-782 FF+10d | 132d | 0d | Pre-qualification Approval [40 h] |
|  | 19 | **Raised Flooring** |  | 2014-10-08 | 2014-11-23 |  |  |  |  |
| PQ-CS-C-802 |  | Tender/Award & Submit Prequalification for Raised Flooring Subcontractor | 30d | 2014-10-08 | 2014-11-11 | PQ-CS-C-762 | 88d | 0d | Pre-qualification Submittals [60 h] |
| PQ-CS-C-812 |  | Pre-qualification Review & Approval of Raised Flooring Subcontractor | 30d | 2014-10-20 | 2014-11-23 | PQ-CS-C-802 SS+10d, PQ-CS-C-802 FF+10d | 178d | 0d | Pre-qualification Approval [40 h] |
|  | 15 | **Porcelain Tiles** |  | 2014-11-12 | 2014-12-29 |  |  |  |  |
| PQ-CS-C-822 |  | Tender/Award & Submit Prequalification for Porcelain Tiles Subcontractor | 30d | 2014-11-12 | 2014-12-16 | PQ-CS-C-802 | 88d | 0d | Pre-qualification Submittals [60 h] |
| PQ-CS-C-832 |  | Pre-qualification Review & Approval of Porcelain Tiles Subcontractor | 30d | 2014-11-24 | 2014-12-29 | PQ-CS-C-822 SS+10d, PQ-CS-C-822 FF+10d | 148d | 0d | Pre-qualification Approval [40 h] |
|  | 17 | **Carpet Tiles** |  | 2014-12-17 | 2015-02-02 |  |  |  |  |
| PQ-CS-C-842 |  | Tender/Award & Submit Prequalification for Carpet TIles Subcontractor | 30d | 2014-12-17 | 2015-01-21 | PQ-CS-C-822 | 88d | 0d | Pre-qualification Submittals [60 h] |
| PQ-CS-C-852 |  | Pre-qualification Review & Approval of Carpet TIles Subcontractor | 30d | 2014-12-30 | 2015-02-02 | PQ-CS-C-842 SS+10d, PQ-CS-C-842 FF+10d | 118d | 0d | Pre-qualification Approval [40 h] |

| ID | WBS | Activity | Duration | Start | Finish | Predecessors | Total float | Free float | Resources |
| --- | --- | --- | --- | --- | --- | --- | --- | --- | --- |
|  | 23 | **Stainless Steel Tiling** |  | 2015-01-22 | 2015-03-10 |  |  |  |  |
| PQ-CS-C-862 |  | Tender/Award & Submit Prequalification for Stainless Steel Tiling Subcontractor | 30d | 2015-01-22 | 2015-02-26 | PQ-CS-C-842 | 88d | 0d | Pre-qualification Submittals [60 h] |
| PQ-CS-C-872 |  | Pre-qualification Review & Approval of Stainless Steel Tiling Subcontractor | 30d | 2015-02-03 | 2015-03-10 | PQ-CS-C-862 SS+10d, PQ-CS-C-862 FF+10d | 88d | 0d | Pre-qualification Approval [40 h] |
|  | 12 | **Toilet Cubicle Partitions** |  | 2015-02-28 | 2015-04-08 |  |  |  |  |
| PQ-CS-C-882 |  | Tender/Award & Submit Prequalification for Toilet Cubicle Partition Subcontractor | 25d | 2015-02-28 | 2015-03-28 | PQ-CS-C-862 | 91d | 0d | Pre-qualification Submittals [60 h] |
| PQ-CS-C-892 |  | Pre-qualification Review & Approval of Toilet Cubicle Partition Subcontractor | 25d | 2015-03-11 | 2015-04-08 | PQ-CS-C-882 SS+10d, PQ-CS-C-882 FF+10d | 91d | 0d | Pre-qualification Approval [40 h] |
|  | 18 | **Metal Ceiling Tiles** |  | 2014-11-12 | 2014-12-29 |  |  |  |  |
| PQ-CS-C-902 |  | Tender/Award & Submit Prequalification for Metal Ceiling Tiles Subcontractor | 30d | 2014-11-12 | 2014-12-16 | PQ-CS-C-802 | 91d | 0d | Pre-qualification Submittals [60 h] |
| PQ-CS-C-912 |  | Pre-qualification Review & Approval of Metal Ceiling Tiles Subcontractor | 30d | 2014-11-24 | 2014-12-29 | PQ-CS-C-902 SS+10d, PQ-CS-C-902 FF+10d | 120d | 0d | Pre-qualification Approval [40 h] |
|  | 16 | **E-poxy** |  | 2014-12-17 | 2015-02-02 |  |  |  |  |
| PQ-CS-C-922 |  | Tender/Award & Submit Prequalification for E-poxy Subcontractor | 30d | 2014-12-17 | 2015-01-21 | PQ-CS-C-902 | 91d | 0d | Pre-qualification Submittals [60 h] |
| PQ-CS-C-932 |  | Pre-qualification Review & Approval of E-poxy Subcontractor | 30d | 2014-12-30 | 2015-02-02 | PQ-CS-C-922 SS+10d, PQ-CS-C-922 FF+10d | 118d | 0d | Pre-qualification Approval [40 h] |
|  | 20 | **Paint** |  | 2015-01-22 | 2015-03-10 |  |  |  |  |
| PQ-CS-C-942 |  | Tender/Award & Submit Prequalification for Paint Subcontractor | 30d | 2015-01-22 | 2015-02-26 | PQ-CS-C-922 | 91d | 0d | Pre-qualification Submittals [60 h] |
| PQ-CS-C-952 |  | Pre-qualification Review & Approval of Paint Subcontractor | 30d | 2015-02-03 | 2015-03-10 | PQ-CS-C-942 SS+10d, PQ-CS-C-942 FF+10d | 106d | 0d | Pre-qualification Approval [40 h] |
|  | 11 | **Internal Glazed windows** |  | 2015-01-22 | 2015-03-10 |  |  |  |  |
| PQ-CS-C-962 |  | Tender/Award & Submit Prequalification for Internal Glazed Windows Subcontractor | 30d | 2015-01-22 | 2015-02-26 | PQ-CS-C-942 SS | 91d | 0d | Pre-qualification Submittals [60 h] |
| PQ-CS-C-972 |  | Pre-qualification Review & Approval of Internal Glazed Windows Subcontractor | 30d | 2015-02-03 | 2015-03-10 | PQ-CS-C-962 SS+10d, PQ-CS-C-962 FF+10d | 230d | 0d | Pre-qualification Approval [40 h] |
|  | 10 | **Glass Partition & Screens** |  | 2015-02-28 | 2015-04-08 |  |  |  |  |
| PQ-CS-C-982 |  | Tender/Award & Submit Prequalification for Glass Partition Subcontractor | 25d | 2015-02-28 | 2015-03-28 | PQ-CS-C-962 | 91d | 0d | Pre-qualification Submittals [60 h] |
| PQ-CS-C-992 |  | Pre-qualification Review & Approval of Glass Partition Subcontractor | 25d | 2015-03-11 | 2015-04-08 | PQ-CS-C-982 SS+10d, PQ-CS-C-982 FF+10d | 91d | 0d | Pre-qualification Approval [40 h] |
|  | 8 | **Wooden Doors** |  | 2015-03-29 | 2015-05-13 |  |  |  |  |
| PQ-CS-C-1002 |  | Tender/Award & Submit Prequalification for Wooden Partition Subcontractor | 30d | 2015-03-29 | 2015-05-02 | PQ-CS-C-982 | 99d | 0d | Pre-qualification Submittals [60 h] |
| PQ-CS-C-1012 |  | Pre-qualification Review & Approval of Wooden Partition Subcontractor | 30d | 2015-04-09 | 2015-05-13 | PQ-CS-C-1002 SS+10d, PQ-CS-C-1002 FF+10d | 129d | 0d | Pre-qualification Approval [40 h] |

| ID | WBS | Activity | Duration | Start | Finish | Predecessors | Total float | Free float | Resources |
| --- | --- | --- | --- | --- | --- | --- | --- | --- | --- |
|  | 7 | **Glazed Doors** |  | 2015-05-03 | 2015-06-17 |  |  |  |  |
| PQ-CS-C-1022 |  | Tender/Award & Submit Prequalification for Glazed Doors Subcontractor | 30d | 2015-05-03 | 2015-06-06 | PQ-CS-C-1002 | 99d | 0d | Pre-qualification Submittals [60 h] |
| PQ-CS-C-1032 |  | Pre-qualification Review & Approval of Glazed Doors Subcontractor | 30d | 2015-05-14 | 2015-06-17 | PQ-CS-C-1022 SS+10d, PQ-CS-C-1022 FF+10d | 99d | 0d | Pre-qualification Approval [40 h] |
|  | 6 | **Steel Doors** |  | 2014-12-17 | 2015-02-02 |  |  |  |  |
| PQ-CS-C-1042 |  | Tender/Award & Submit Prequalification for Steel Doors Subcontractor | 30d | 2014-12-17 | 2015-01-21 | PQ-CS-C-902 | 124d | 0d | Pre-qualification Submittals [60 h] |
| PQ-CS-C-1052 |  | Pre-qualification Review & Approval of Steel Doors Subcontractor | 30d | 2014-12-30 | 2015-02-02 | PQ-CS-C-1042 SS+10d, PQ-CS-C-1042 FF+10d | 214d | 0d | Pre-qualification Approval [40 h] |
|  | 2 | **Steel ladder** |  | 2015-01-22 | 2015-03-10 |  |  |  |  |
| PQ-CS-C-1062 |  | Tender/Award & Submit Prequalification for Steel Ladder Subcontractor | 30d | 2015-01-22 | 2015-02-26 | PQ-CS-C-1042 | 124d | 0d | Pre-qualification Submittals [60 h] |
| PQ-CS-C-1072 |  | Pre-qualification Review & Approval of Steel Ladder Subcontractor | 30d | 2015-02-03 | 2015-03-10 | PQ-CS-C-1062 SS+10d, PQ-CS-C-1062 FF+10d | 184d | 0d | Pre-qualification Approval [40 h] |
|  | 9 | **Steel Roller Shutter** |  | 2015-02-28 | 2015-04-14 |  |  |  |  |
| PQ-CS-C-1082 |  | Tender/Award & Submit Prequalification for Steel Roller Shutter Subcontractor | 30d | 2015-02-28 | 2015-04-02 | PQ-CS-C-1062 | 124d | 0d | Pre-qualification Submittals [60 h] |
| PQ-CS-C-1092 |  | Pre-qualification Review & Approval of Steel Roller Shutter Subcontractor | 30d | 2015-03-11 | 2015-04-14 | PQ-CS-C-1082 SS+10d, PQ-CS-C-1082 FF+10d | 154d | 0d | Pre-qualification Approval [40 h] |
|  | 5 | **Steel handrail and balustrade** |  | 2015-04-04 | 2015-05-19 |  |  |  |  |
| PQ-CS-C-1102 |  | Tender/Award & Submit Prequalification for Steel Handrails Subcontractor | 30d | 2015-04-04 | 2015-05-07 | PQ-CS-C-1082 | 124d | 0d | Pre-qualification Submittals [60 h] |
| PQ-CS-C-1112 |  | Pre-qualification Review & Approval of Steel Handrails Subcontractor | 30d | 2015-04-15 | 2015-05-19 | PQ-CS-C-1102 SS+10d, PQ-CS-C-1102 FF+10d | 124d | 0d | Pre-qualification Approval [40 h] |
|  | 4 | **Bumper Rails** |  | 2015-05-09 | 2015-06-23 |  |  |  |  |
| PQ-CS-C-1142 |  | Tender/Award & Submit Prequalification for Bumper Rails Subcontractor | 30d | 2015-05-09 | 2015-06-11 | PQ-CS-C-1102 | 307d | 0d | Pre-qualification Submittals [60 h] |
| PQ-CS-C-1152 |  | Pre-qualification Review & Approval of Bumper Rails Subcontractor | 30d | 2015-05-20 | 2015-06-23 | PQ-CS-C-1142 SS+10d, PQ-CS-C-1142 FF+10d | 398d | 0d | Pre-qualification Approval [40 h] |
|  | 21 | **Kerbs & Paving** |  | 2015-06-13 | 2015-07-30 |  |  |  |  |
| PQ-CS-C-1162 |  | Tender/Award & Submit Prequalification for Kerbs & Paving Subcontractor | 30d | 2015-06-13 | 2015-07-19 | PQ-CS-C-1142 | 307d | 0d | Pre-qualification Submittals [60 h] |
| PQ-CS-C-1172 |  | Pre-qualification Review & Approval of Kerbs & Paving Subcontractor | 30d | 2015-06-24 | 2015-07-30 | PQ-CS-C-1162 SS+10d, PQ-CS-C-1162 FF+10d | 318d | 0d | Pre-qualification Approval [40 h] |
|  | 3 | **Steel grating system** |  | 2015-07-20 | 2015-09-03 |  |  |  |  |
| PQ-CS-C-1182 |  | Tender/Award & Submit Prequalification for Steel Grating Subcontractor | 30d | 2015-07-20 | 2015-08-23 | PQ-CS-C-1162 | 307d | 0d | Pre-qualification Submittals [60 h] |
| PQ-CS-C-1192 |  | Pre-qualification Review & Approval of Steel Grating Subcontractor | 30d | 2015-08-01 | 2015-09-03 | PQ-CS-C-1182 SS+10d, PQ-CS-C-1182 FF+10d | 307d | 0d | Pre-qualification Approval [40 h] |

| ID | WBS | Activity | Duration | Start | Finish | Predecessors | Total float | Free float | Resources |
| --- | --- | --- | --- | --- | --- | --- | --- | --- | --- |
|  | 4 | **Lifts & Escalators** |  | 2014-10-08 | 2014-11-04 |  |  |  |  |
| PQ-CS-C-562 |  | Tender/Award & Submit Prequalification for Lift & Escalators Subcontractor | 14d | 2014-10-08 | 2014-10-23 | PQ-CS-C-802 SS | 104d | 0d | Pre-qualification Submittals [60 h] |
| PQ-CS-C-572 |  | Pre-qualification Review & Approval of Lift & Escalators Subcontractor | 14d | 2014-10-20 | 2014-11-04 | PQ-CS-C-562 SS+10d, PQ-CS-C-562 FF+10d | 216d | 0d | Pre-qualification Approval [40 h] |
|  | 7 | **Specialistes & Specialist Equipments** |  | 2014-10-25 | 2015-06-04 |  |  |  |  |
|  | 1 | **Linen Chute** |  | 2014-10-25 | 2015-01-14 |  |  |  |  |
| PQ-CS-C-542 |  | Tender/Award & Submit Prequalification for Linen Chute Subcontractor | 60d | 2014-10-25 | 2015-01-03 | PQ-CS-C-562 | 104d | 0d | Pre-qualification Submittals [60 h] |
| PQ-CS-C-552 |  | Pre-qualification Review & Approval of Linen Chute Subcontractor | 30d | 2014-12-10 | 2015-01-14 | PQ-CS-C-542 SS+10d, PQ-CS-C-542 FF+10d | 260d | 0d | Pre-qualification Approval [40 h] |
|  | 2 | **BMU - Building Maintenance Unit** |  | 2015-01-04 | 2015-03-26 |  |  |  |  |
| PQ-CS-C-582 |  | Tender/Award & Submit Prequalification for BMU Subcontractor | 60d | 2015-01-04 | 2015-03-15 | PQ-CS-C-542 | 104d | 0d | Pre-qualification Submittals [60 h] |
| PQ-CS-C-592 |  | Pre-qualification Review & Approval of BMU Subcontractor | 30d | 2015-02-21 | 2015-03-26 | PQ-CS-C-582 SS+10d, PQ-CS-C-582 FF+10d | 104d | 0d | Pre-qualification Approval [40 h] |
|  | 3 | **Swimming Pools** |  | 2015-03-16 | 2015-06-04 |  |  |  |  |
| PQ-CS-C-602 |  | Tender/Award & Submit Prequalification for Swimming Pool Subcontractor | 60d | 2015-03-16 | 2015-05-24 | PQ-CS-C-582 | 127d | 0d | Pre-qualification Submittals [60 h] |
| PQ-CS-C-612 |  | Pre-qualification Review & Approval of Swimming Pool Subcontractor | 30d | 2015-05-02 | 2015-06-04 | PQ-CS-C-602 SS+10d, PQ-CS-C-602 FF+10d | 127d | 0d | Pre-qualification Approval [40 h] |
|  | 8 | **Landscaping & External Works** |  | 2015-05-25 | 2015-08-11 |  |  |  |  |
|  | 1 | **Landscaping** |  | 2015-05-25 | 2015-06-21 |  |  |  |  |
| PQ-CS-C-622 |  | Tender/Award & Submit Prequalification for Landscaping Subcontractor | 14d | 2015-05-25 | 2015-06-09 | PQ-CS-C-602, PQ-CS-C-1082 | 271d | 0d | Pre-qualification Submittals [60 h] |
| PQ-CS-C-632 |  | Pre-qualification Review & Approval of Landscaping Subcontractor | 14d | 2015-06-06 | 2015-06-21 | PQ-CS-C-622 SS+10d, PQ-CS-C-622 FF+10d | 271d | 0d | Pre-qualification Approval [40 h] |
|  | 2 | **Granite Wall Cladding** |  | 2015-05-25 | 2015-06-21 |  |  |  |  |
| PQ-CS-C-642 |  | Tender/Award & Submit Prequalification for Granite Subcontractor | 14d | 2015-05-25 | 2015-06-09 | PQ-CS-C-602 | 151d | 0d | Pre-qualification Submittals [60 h] |
| PQ-CS-C-652 |  | Pre-qualification Review & Approval of Granite Subcontractor | 14d | 2015-06-06 | 2015-06-21 | PQ-CS-C-642 SS+10d, PQ-CS-C-642 FF+10d | 285d | 0d | Pre-qualification Approval [40 h] |
|  | 3 | **Water Fountain** |  | 2015-06-10 | 2015-07-07 |  |  |  |  |
| PQ-CS-C-662 |  | Tender/Award & Submit Prequalification for Water Fountain Subcontractor | 14d | 2015-06-10 | 2015-06-25 | PQ-CS-C-642 | 151d | 0d | Pre-qualification Submittals [60 h] |
| PQ-CS-C-672 |  | Pre-qualification Review & Approval of Water Fountain Subcontractor | 14d | 2015-06-22 | 2015-07-07 | PQ-CS-C-662 SS+10d, PQ-CS-C-662 FF+10d | 285d | 0d | Pre-qualification Approval [40 h] |
|  | 7 | **Signage** |  | 2015-06-27 | 2015-07-26 |  |  |  |  |
| PQ-CS-C-682 |  | Tender/Award & Submit Prequalification for Signage Subcontractor | 14d | 2015-06-27 | 2015-07-12 | PQ-CS-C-662 | 151d | 0d | Pre-qualification Submittals [60 h] |
| PQ-CS-C-692 |  | Pre-qualification Review & Approval of Signage Subcontractor | 14d | 2015-07-08 | 2015-07-26 | PQ-CS-C-682 SS+10d, PQ-CS-C-682 FF+10d | 449d | 0d | Pre-qualification Approval [40 h] |

| ID | WBS | Activity | Duration | Start | Finish | Predecessors | Total float | Free float | Resources | Cost |
| --- | --- | --- | --- | --- | --- | --- | --- | --- | --- | --- |
|  | 8 | **Car Park Control Barriers & Bollards** |  | 2015-07-13 | 2015-08-11 |  |  |  |  |  |
| PQ-CS-C-702 |  | Tender/Award & Submit Prequalification for Control Barriers & Bollards Subcontractor | 14d | 2015-07-13 | 2015-07-30 | PQ-CS-C-682 | 151d | 0d | Pre-qualification Submittals [60 h] |  |
| PQ-CS-C-712 |  | Pre-qualification Review & Approval of Control Barriers & Bollards Subcontractor | 14d | 2015-07-27 | 2015-08-11 | PQ-CS-C-702 SS+10d, PQ-CS-C-702 FF+10d | 397d | 0d | Pre-qualification Approval [40 h] |  |
|  | 5 | **Furniture** |  | 2015-08-01 | 2015-08-27 |  |  |  |  |  |
| PQ-CS-C-722 |  | Tender/Award & Submit Prequalification for Furniture Subcontractor | 14d | 2015-08-01 | 2015-08-16 | PQ-CS-C-702 | 151d | 0d | Pre-qualification Submittals [60 h] |  |
| PQ-CS-C-732 |  | Pre-qualification Review & Approval of Furniture Subcontractor | 14d | 2015-08-12 | 2015-08-27 | PQ-CS-C-722 SS+10d, PQ-CS-C-722 FF+10d | 151d | 0d | Pre-qualification Approval [40 h] |  |
|  | 5 | **Method of Statements** |  | 2014-10-02 | 2015-10-05 |  |  |  |  |  |
|  | 1 | **Civil/Structural** |  | 2014-10-02 | 2014-11-03 |  |  |  |  |  |
|  | 1 | **Dewatering - Method of Statement** |  | 2014-10-14 | 2014-11-02 |  |  |  |  |  |
| MS-CS-C-102 |  | Preparation & Submittal of Dewatering Method of Statement | 7d | 2014-10-14 | 2014-10-21 | PQ-CS-C-52 SS | 1d | 0d | Method Statements Submittals [60 h] | 6,861.04 |
| MS-CS-C-112 |  | Review & Approval of Dewatering Method of Statement | 10d | 2014-10-22 | 2014-11-02 | MS-CS-C-102, PQ-CS-C-52 SS | 1d | 0d | Method Statements Approval [40 h] | 6,861.04 |
|  | 2 | **Piling Protection - Method of Statement** |  | 2014-10-18 | 2014-11-03 |  |  |  |  |  |
| MS-CS-C-122 |  | Preparation & Submittal of Protection Piles Method of Statement | 5d | 2014-10-18 | 2014-10-22 | PQ-CS-C-32 SS | 0d |  | Method Statements Submittals [60 h] | 6,861.04 |
| MS-CS-C-132 |  | Review & Approval of Protection Piles of Statement | 10d | 2014-10-23 | 2014-11-03 | MS-CS-C-122 | 0d |  | Method Statements Approval [40 h] | 6,861.04 |
|  | 3 | **Core Walls - Method of Statement** |  | 2014-10-02 | 2014-11-02 |  |  |  |  |  |
| PQ-CS-C-142 |  | Preparation & Submittal of Core Walls Method of Statement | 14d | 2014-10-02 | 2014-10-21 | G-CM-001 | 21d | 0d | Method Statements Submittals [60 h] |  |
| PQ-CS-C-152 |  | Review & Approval of Core Walls Method of Statement | 10d | 2014-10-22 | 2014-11-02 | PQ-CS-C-142 | 21d |  | Method Statements Approval [40 h] |  |
|  | 4 | **RC - Raft, Slab, Ramps, Columns & Walls - Method of Statement** |  | 2014-10-02 | 2014-10-28 |  |  |  |  |  |
| PQ-CS-C-162 |  | Preparation & Submittal of Reinforcement / Concrete Method of Statement | 7d | 2014-10-02 | 2014-10-13 | G-CM-001 | 4d | 0d | Method Statements Submittals [60 h] |  |
| PQ-CS-C-172 |  | Review & Approval of Reinforcement / Concrete Method of Statement | 10d | 2014-10-18 | 2014-10-28 | PQ-CS-C-162 SS+10d, PQ-CS-C-162 FF+10d | 4d |  | Method Statements Approval [40 h] |  |
|  | 6 | **Structural Steel** |  | 2014-10-18 | 2015-07-02 |  |  |  |  |  |
|  | 2 | **Main Canopy - Facade Canopy** |  | 2014-10-18 | 2014-12-02 |  |  |  |  |  |
| PQ-CS-C-222 |  | Preparation & Submittal of MS for the Structural Steel of Main canopy | 30d | 2014-10-18 | 2014-11-20 | PQ-CS-C-92 SS | 81d | 0d | Method Statements Submittals [60 h] |  |
| PQ-CS-C-232 |  | Review & Approval of MS for the Structural Steel of Main canopy | 30d | 2014-10-29 | 2014-12-02 | PQ-CS-C-222 SS+10d, PQ-CS-C-222 FF+10d | 189d | 88d | Method Statements Approval [40 h] |  |

Notes:
- MS-CS-C-102: Expenses: F 3430.52; C 3430.52
- MS-CS-C-112: Expenses: F 3430.52; C 3430.52
- MS-CS-C-122: Expenses: F 3430.52; C 3430.52
- MS-CS-C-132: Expenses: F 3430.52; C 3430.52

| ID | WBS | Activity | Duration | Start | Finish | Predecessors | Total float | Free float | Resources |
| --- | --- | --- | --- | --- | --- | --- | --- | --- | --- |
|  | 3 | **Main Lobby - Truss Framing** |  | 2014-11-22 | 2015-01-07 |  |  |  |  |
| PQ-CS-C-242 |  | Preparation & Submittal of MS for the Structural Steel of Truss Framing | 30d | 2014-11-22 | 2014-12-27 | PQ-CS-C-92 SS, PQ-CS-C-222 | 81d | 0d | Method Statements Submittals [60 h] |
| PQ-CS-C-252 |  | Review & Approval of MS for the Structural Steel of Truss Framing | 30d | 2014-12-03 | 2015-01-07 | PQ-CS-C-242 SS+10d, PQ-CS-C-242 FF+10d | 81d | 67d | Method Statements Approval [40 h] |
|  | 1 | **Entrance Canopy** |  | 2014-12-28 | 2015-02-12 |  |  |  |  |
| PQ-CS-C-202 |  | Preparation & Submittal of MS for the Structural Steel of Entrance canopy | 30d | 2014-12-28 | 2015-01-31 | PQ-CS-C-92 SS, PQ-CS-C-242 | 86d | 0d | Method Statements Submittals [60 h] |
| PQ-CS-C-212 |  | Review & Approval of MS for the Structural Steel of Entrance canopy | 30d | 2015-01-08 | 2015-02-12 | PQ-CS-C-202 SS+10d, PQ-CS-C-202 FF+10d | 86d | 0d | Method Statements Approval [40 h] |
|  | 9 | **Structural Steel Columns at 33rd Floor** |  | 2015-02-01 | 2015-03-19 |  |  |  |  |
| PQ-CS-C-342 |  | Preparation & Submittal of MS for the Structural Steel within the Columns | 30d | 2015-02-01 | 2015-03-08 | PQ-CS-C-92, PQ-CS-C-202 | 169d | 0d | Method Statements Submittals [60 h] |
| PQ-CS-C-352 |  | Review & Approval of MS for the Structural Steel within the Columns | 30d | 2015-02-14 | 2015-03-19 | PQ-CS-C-342 SS+10d, PQ-CS-C-342 FF+10d | 192d |  | Method Statements Approval [40 h] |
|  | 5 | **Swimming Pool Decking** |  | 2015-03-09 | 2015-04-23 |  |  |  |  |
| PQ-CS-C-282 |  | Preparation & Submittal of MS for the Structural Steel of swimming Pool Decking | 30d | 2015-03-09 | 2015-04-12 | PQ-CS-C-202, PQ-CS-C-342 | 169d | 0d | Method Statements Submittals [60 h] |
| PQ-CS-C-292 |  | Review & Approval of MS for the Structural Steel of swimming Pool Decking | 30d | 2015-03-21 | 2015-04-23 | PQ-CS-C-282 SS+10d, PQ-CS-C-282 FF+10d | 169d | 167d | Method Statements Approval [40 h] |
|  | 6 | **Floor Decking from Ground floor to third floor** |  | 2014-11-03 | 2014-12-20 |  |  |  |  |
| PQ-CS-C-302 |  | Preparation & Submittal of MS for the Structural Steel of floot decking 1st to third floor | 30d | 2014-11-03 | 2014-12-07 | PQ-CS-C-92 | 97d | 0d | Method Statements Submittals [60 h] |
| PQ-CS-C-312 |  | Review & Approval of MS for the Structural Steel of floot decking 1st to third floor | 30d | 2014-11-15 | 2014-12-20 | PQ-CS-C-302 SS+10d, PQ-CS-C-302 FF+10d | 97d | 96d | Method Statements Approval [40 h] |
|  | 7 | **Pergola Support** |  | 2015-04-13 | 2015-05-28 |  |  |  |  |
| PQ-CS-C-322 |  | Preparation & Submittal of MS for Pergola | 30d | 2015-04-13 | 2015-05-17 | PQ-CS-C-92, PQ-CS-C-282 | 243d | 0d | Method Statements Submittals [60 h] |
| PQ-CS-C-332 |  | Review & Approval of MS for the Pergola | 30d | 2015-04-25 | 2015-05-28 | PQ-CS-C-322 SS+10d, PQ-CS-C-322 FF+10d | 243d | 205d | Method Statements Approval [40 h] |
|  | 4 | **Roof Crown Support** |  | 2015-05-18 | 2015-07-02 |  |  |  |  |
| PQ-CS-C-262 |  | Preparation & Submittal of MS for the Structural Steel of Roof Crown Support | 30d | 2015-05-18 | 2015-06-21 | PQ-CS-C-92, PQ-CS-C-322 | 243d | 0d | Method Statements Submittals [60 h] |
| PQ-CS-C-272 |  | Review & Approval of MS for the Structural Steel of Roof Crown Support | 30d | 2015-05-30 | 2015-07-02 | PQ-CS-C-262 SS+10d, PQ-CS-C-262 FF+10d | 243d | 236d | Method Statements Approval [40 h] |
|  | 9 | **Facade Subcontractor** |  | 2014-12-09 | 2015-01-25 |  |  |  |  |
| PQ-CS-C-1542 |  | Preparation & Submittal of MS for the Facade Installation | 30d | 2014-12-09 | 2015-01-13 | PQ-CS-C-752 | 5d | 0d | Method Statements Submittals [60 h] |
| PQ-CS-C-1552 |  | Review & Approval of MS the Facade Installation | 30d | 2014-12-22 | 2015-01-25 | PQ-CS-C-1542 SS+10d, PQ-CS-C-1542 FF+10d | 5d | 2d | Method Statements Approval [40 h] |

| ID | WBS | Activity | Duration | Start | Finish | Predecessors | Total float | Free float | Resources | Cost |
| --- | --- | --- | --- | --- | --- | --- | --- | --- | --- | --- |
|  | 2 | **MEP** |  | 2014-10-20 | 2015-03-22 |  |  |  |  |  |
|  | 1 | **Embeded Items from Basement 1 to Basement 3** |  | 2014-11-03 | 2014-12-20 |  |  |  |  |  |
| PQ-CS-C-1202 |  | Preparation & Submittal of MS for MEP Embeded Items B3 to B1 Installation | 30d | 2014-11-03 | 2014-12-07 | PQ-CS-C-412 | 194d | 0d | Method Statements Submittals [60 h] |  |
| PQ-CS-C-1212 |  | Review & Approval of MS of MEP Embeded Items B3 to B1 Installation | 30d | 2014-11-15 | 2014-12-20 | PQ-CS-C-1202 SS+10d, PQ-CS-C-1202 FF+10d | 194d | 12d | Method Statements Approval [40 h] |  |
|  | 2 | **Plumbing & Drainage Works** |  | 2014-11-18 | 2015-01-04 |  |  |  |  |  |
| PQ-CS-C-1222 |  | Preparation & Submittal of MS for Plumbing & Drainage Installation | 30d | 2014-11-18 | 2014-12-23 | PQ-CS-C-452, PQ-CS-C-432 | 170d | 0d | Method Statements Submittals [60 h] |  |
| PQ-CS-C-1232 |  | Review & Approval of MS of Plumbing & Drainage Installation | 30d | 2014-11-30 | 2015-01-04 | PQ-CS-C-1222 SS+10d, PQ-CS-C-1222 FF+10d | 170d | 68d | Method Statements Approval [40 h] |  |
|  | 3 | **HVAC Works** |  | 2014-11-18 | 2015-01-04 |  |  |  |  |  |
| PQ-CS-C-1242 |  | Preparation & Submittal of MS for HVAC Installation | 30d | 2014-11-18 | 2014-12-23 | PQ-CS-C-452 | 150d | 0d | Method Statements Submittals [60 h] |  |
| PQ-CS-C-1252 |  | Review & Approval of MSof HVAC Installation | 30d | 2014-11-30 | 2015-01-04 | PQ-CS-C-1242 SS+10d, PQ-CS-C-1242 FF+10d | 150d | 43d | Method Statements Approval [40 h] |  |
|  | 4 | **Electrical Works** |  | 2014-10-20 | 2014-12-04 |  |  |  |  |  |
| PQ-CS-C-1262 |  | Preparation & Submittal of MS for Electrical Installation | 30d | 2014-10-20 | 2014-11-23 | PQ-CS-C-472 | 186d | 0d | Method Statements Submittals [60 h] |  |
| PQ-CS-C-1272 |  | Review & Approval of MS of Electrical Installation | 30d | 2014-11-01 | 2014-12-04 | PQ-CS-C-1262 SS+10d, PQ-CS-C-1262 FF+10d | 186d | 82d | Method Statements Approval [40 h] |  |
|  | 5 | **ELV works** |  | 2014-11-24 | 2015-01-10 |  |  |  |  |  |
| PQ-CS-C-1282 |  | Preparation & Submittal of MS for ELV Installation | 30d | 2014-11-24 | 2014-12-29 | PQ-CS-C-492 | 125d | 0d | Method Statements Submittals [60 h] |  |
| PQ-CS-C-1292 |  | Review & Approval of MS of ELV Installation | 30d | 2014-12-06 | 2015-01-10 | PQ-CS-C-1282 SS+10d, PQ-CS-C-1282 FF+10d | 125d | 63d | Method Statements Approval [40 h] |  |
|  | 6 | **BMS - Building Management System** |  | 2014-12-17 | 2015-02-02 |  |  |  |  |  |
| PQ-CS-C-1302 |  | Preparation & Submittal of MS for BMS Installation | 30d | 2014-12-17 | 2015-01-21 | PQ-CS-C-502 | 162d | 0d | Method Statements Submittals [60 h] |  |
| PQ-CS-C-1312 |  | Review & Approval of MS of BMS Installation | 30d | 2014-12-30 | 2015-02-02 | PQ-CS-C-1302 SS+10d, PQ-CS-C-1302 FF+10d | 162d | 43d | Method Statements Approval [40 h] |  |
|  | 7 | **Gas Installation** |  | 2015-02-03 | 2015-03-22 |  |  |  |  |  |
| PQ-CS-C-1322 |  | Preparation & Submittal of MS for Gas Installation | 30d | 2015-02-03 | 2015-03-10 | PQ-CS-C-532 | 284d | 0d | Method Statements Submittals [60 h] |  |
| PQ-CS-C-1332 |  | Review & Approval of MS of Gas Installation | 30d | 2015-02-16 | 2015-03-22 | PQ-CS-C-1322 SS+10d, PQ-CS-C-1322 FF+10d | 284d | 115d | Method Statements Approval [40 h] |  |
|  | 3 | **Architectural / Finishes** |  | 2014-10-20 | 2015-10-05 |  |  |  |  |  |
|  | 1 | **Gypsum Board Partition & Ceiling** |  | 2014-10-20 | 2014-11-16 |  |  |  |  |  |
| MS-A-GB-562 |  | Preparation & Submittal of MS for Gypsum Board Partition & Ceiling Installation | 14d | 2014-10-20 | 2014-11-04 | PQ-CS-C-772 | 171d | 0d | Method Statements Submittals [60 h] | 11,435.08 |
| MS-A-GB-1572 |  | Review & Approval of MS of Gypsum Board Partition & Ceiling Installation | 14d | 2014-11-01 | 2014-11-16 | MS-A-GB-562 SS+10d, MS-A-GB-562 FF+10d | 171d | 96d | Method Statements Approval [40 h] | 11,435.08 |

Notes:
- MS-A-GB-562: Expenses: P 11435.1
- MS-A-GB-1572: Expenses: P 11435.1

| ID | WBS | Activity | Duration | Start | Finish | Predecessors | Total float | Free float | Resources |
| --- | --- | --- | --- | --- | --- | --- | --- | --- | --- |
|  | 14 | **Cement Board** |  | 2015-01-11 | 2015-02-07 |  |  |  |  |
| PQ-CS-C-1582 |  | Preparation & Submittal of MS for Cement Board Installation | 14d | 2015-01-11 | 2015-01-26 | PQ-CS-C-792 | 252d | 0d | Method Statements Submittals [60 h] |
| PQ-CS-C-1592 |  | Review & Approval of MS of Cement Board Installation | 14d | 2015-01-22 | 2015-02-07 | PQ-CS-C-1582 SS+10d, PQ-CS-C-1582 FF+10d | 252d | 122d | Method Statements Approval [40 h] |
|  | 19 | **Raised Flooring** |  | 2014-11-24 | 2014-12-22 |  |  |  |  |
| PQ-CS-C-1602 |  | Preparation & Submittal of MS for Raised Flooring Installation | 14d | 2014-11-24 | 2014-12-09 | PQ-CS-C-812 | 425d | 0d | Method Statements Submittals [60 h] |
| PQ-CS-C-1612 |  | Review & Approval of MS of Raised Flooring Installation | 14d | 2014-12-06 | 2014-12-22 | PQ-CS-C-1602 SS+10d, PQ-CS-C-1602 FF+10d, PQ-CS-C-812 | 425d | 274d | Method Statements Approval [40 h] |
|  | 15 | **Porcelain Tiles** |  | 2014-12-30 | 2015-01-26 |  |  |  |  |
| PQ-CS-C-1622 |  | Preparation & Submittal of MS for Porcelain Tiles Installation | 14d | 2014-12-30 | 2015-01-14 | PQ-CS-C-832 | 411d | 0d | Method Statements Submittals [60 h] |
| PQ-CS-C-1632 |  | Review & Approval of MS of Porcelain Tiles Installation | 14d | 2015-01-11 | 2015-01-26 | PQ-CS-C-1622 SS+10d, PQ-CS-C-1622 FF+10d | 411d | 325d | Method Statements Approval [40 h] |
|  | 17 | **Carpet Tiles** |  | 2015-02-03 | 2015-03-03 |  |  |  |  |
| PQ-CS-C-1642 |  | Preparation & Submittal of MS for Carpet TIles Installation | 14d | 2015-02-03 | 2015-02-19 | PQ-CS-C-852 | 406d | 0d | Method Statements Submittals [60 h] |
| PQ-CS-C-1652 |  | Review & Approval of MS of Carpet TIles Installation | 14d | 2015-02-16 | 2015-03-03 | PQ-CS-C-1642 SS+10d, PQ-CS-C-1642 FF+10d | 406d | 320d | Method Statements Approval [40 h] |
|  | 23 | **Stainless Steel Tiling** |  | 2015-03-11 | 2015-04-07 |  |  |  |  |
| PQ-CS-C-1662 |  | Preparation & Submittal of MS for Stainless Steel Tiling Installation | 14d | 2015-03-11 | 2015-03-26 | PQ-CS-C-872 | 351d | 0d | Method Statements Submittals [60 h] |
| PQ-CS-C-1672 |  | Review & Approval of MS of Stainless Steel Tiling Installation | 14d | 2015-03-23 | 2015-04-07 | PQ-CS-C-1662 SS+10d, PQ-CS-C-1662 FF+10d | 351d | 265d | Method Statements Approval [40 h] |
|  | 12 | **Toilet Cubicle Partitions** |  | 2015-04-09 | 2015-05-06 |  |  |  |  |
| PQ-CS-C-1682 |  | Preparation & Submittal of MS for Toilet Cubicle Partition Installation | 14d | 2015-04-09 | 2015-04-25 | PQ-CS-C-892 | 284d | 0d | Method Statements Submittals [60 h] |
| PQ-CS-C-1692 |  | Review & Approval of MS of Toilet Cubicle Partition Installation | 14d | 2015-04-21 | 2015-05-06 | PQ-CS-C-1682 SS+10d, PQ-CS-C-1682 FF+10d | 284d | 108d | Method Statements Approval [40 h] |
|  | 18 | **Metal Ceiling Tiles** |  | 2014-12-30 | 2015-01-26 |  |  |  |  |
| PQ-CS-C-1702 |  | Preparation & Submittal of MS for Metal Ceiling Tiles Installation | 14d | 2014-12-30 | 2015-01-14 | PQ-CS-C-912 | 349d | 0d | Method Statements Submittals [60 h] |
| PQ-CS-C-1712 |  | Review & Approval of MS of Metal Ceiling Tiles Installation | 14d | 2015-01-11 | 2015-01-26 | PQ-CS-C-1702 SS+10d, PQ-CS-C-1702 FF+10d | 349d | 219d | Method Statements Approval [40 h] |
|  | 16 | **E-poxy** |  | 2015-02-03 | 2015-03-03 |  |  |  |  |
| PQ-CS-C-1722 |  | Preparation & Submittal of MS for E-poxy Installation | 14d | 2015-02-03 | 2015-02-19 | PQ-CS-C-922, PQ-CS-C-932 | 443d | 0d | Method Statements Submittals [60 h] |
| PQ-CS-C-1732 |  | Review & Approval of MS of E-poxy Installation | 14d | 2015-02-16 | 2015-03-03 | PQ-CS-C-1722 SS+10d, PQ-CS-C-1722 FF+10d | 443d | 357d | Method Statements Approval [40 h] |

| ID | WBS | Activity | Duration | Start | Finish | Predecessors | Total float | Free float | Resources |
| --- | --- | --- | --- | --- | --- | --- | --- | --- | --- |
|  | 20 | **Paint** |  | 2015-03-11 | 2015-04-07 |  |  |  |  |
| PQ-CS-C-1742 |  | Preparation & Submittal of MS for Paint Installation | 14d | 2015-03-11 | 2015-03-26 | PQ-CS-C-952 | 413d | 0d | Method Statements Submittals [60 h] |
| PQ-CS-C-1752 |  | Review & Approval of MS of Paint Installation | 14d | 2015-03-23 | 2015-04-07 | PQ-CS-C-1742 SS+10d, PQ-CS-C-1742 FF+10d | 413d | 327d | Method Statements Approval [40 h] |
|  | 11 | **Internal Glazed windows** |  | 2015-03-11 | 2015-04-07 |  |  |  |  |
| PQ-CS-C-1762 |  | Preparation & Submittal of MS for Internal Glazed Windows Installation | 14d | 2015-03-11 | 2015-03-26 | PQ-CS-C-972 | 230d | 0d | Method Statements Submittals [60 h] |
| PQ-CS-C-1772 |  | Review & Approval of MS of Internal Glazed Windows Installation | 14d | 2015-03-23 | 2015-04-07 | PQ-CS-C-1762 SS+10d, PQ-CS-C-1762 FF+10d | 230d | 125d | Method Statements Approval [40 h] |
|  | 10 | **Glass Partition & Screens** |  | 2015-04-09 | 2015-05-06 |  |  |  |  |
| PQ-CS-C-1782 |  | Preparation & Submittal of MS for Glass Partition Installation | 14d | 2015-04-09 | 2015-04-25 | PQ-CS-C-992 | 388d | 0d | Method Statements Submittals [60 h] |
| PQ-CS-C-1792 |  | Review & Approval of MS of Glass Partition Installation | 14d | 2015-04-21 | 2015-05-06 | PQ-CS-C-1782 SS+10d, PQ-CS-C-1782 FF+10d | 388d | 265d | Method Statements Approval [40 h] |
|  | 8 | **Wooden Doors** |  | 2015-05-14 | 2015-06-10 |  |  |  |  |
| PQ-CS-C-1802 |  | Preparation & Submittal of MS for Wooden Partition Installation | 14d | 2015-05-14 | 2015-05-30 | PQ-CS-C-1012 | 313d | 0d | Method Statements Submittals [60 h] |
| PQ-CS-C-1812 |  | Review & Approval of MS of Wooden Partition Installation | 14d | 2015-05-26 | 2015-06-10 | PQ-CS-C-1802 SS+10d, PQ-CS-C-1802 FF+10d | 313d | 130d | Method Statements Approval [40 h] |
|  | 7 | **Glazed Doors** |  | 2015-06-18 | 2015-07-18 |  |  |  |  |
| PQ-CS-C-1822 |  | Preparation & Submittal of MS for Glazed Doors Installation | 14d | 2015-06-18 | 2015-07-04 | PQ-CS-C-1032 | 145d | 0d | Method Statements Submittals [60 h] |
| PQ-CS-C-1832 |  | Review & Approval of MS of Glazed Doors Installation | 14d | 2015-06-30 | 2015-07-18 | PQ-CS-C-1822 SS+10d, PQ-CS-C-1822 FF+10d | 145d | 40d | Method Statements Approval [40 h] |
|  | 6 | **Steel Doors** |  | 2015-02-03 | 2015-03-03 |  |  |  |  |
| PQ-CS-C-1842 |  | Preparation & Submittal of MS for Steel Doors Installation | 14d | 2015-02-03 | 2015-02-19 | PQ-CS-C-1052 | 260d | 0d | Method Statements Submittals [60 h] |
| PQ-CS-C-1852 |  | Review & Approval of MS of Steel Doors Installation | 14d | 2015-02-16 | 2015-03-03 | PQ-CS-C-1842 SS+10d, PQ-CS-C-1842 FF+10d | 260d | 155d | Method Statements Approval [40 h] |
|  | 2 | **Steel ladder** |  | 2015-03-11 | 2015-04-07 |  |  |  |  |
| PQ-CS-C-1862 |  | Preparation & Submittal of MS for Steel Ladder Installation | 14d | 2015-03-11 | 2015-03-26 | PQ-CS-C-1072 | 484d | 0d | Method Statements Submittals [60 h] |
| PQ-CS-C-1872 |  | Review & Approval of MS of Steel Ladder Installation | 14d | 2015-03-23 | 2015-04-07 | PQ-CS-C-1862 SS+10d, PQ-CS-C-1862 FF+10d | 484d | 188d | Method Statements Approval [40 h] |
|  | 9 | **Steel Roller Shutter** |  | 2015-04-15 | 2015-05-12 |  |  |  |  |
| PQ-CS-C-1882 |  | Preparation & Submittal of MS for Steel Roller Shutter Installation | 14d | 2015-04-15 | 2015-04-30 | PQ-CS-C-1092 | 454d | 0d | Method Statements Submittals [60 h] |
| PQ-CS-C-1892 |  | Review & Approval of MS of Steel Roller Shutter Installation | 14d | 2015-04-27 | 2015-05-12 | PQ-CS-C-1882 SS+10d, PQ-CS-C-1882 FF+10d | 454d | 158d | Method Statements Approval [40 h] |

| ID | WBS | Activity | Duration | Start | Finish | Predecessors | Total float | Free float | Resources |
| --- | --- | --- | --- | --- | --- | --- | --- | --- | --- |
|  | 5 | **Steel handrail and balustrade** |  | 2015-05-20 | 2015-06-16 |  |  |  |  |
| PQ-CS-C-1902 |  | Preparation & Submittal of MS for Steel Handrails Installation | 14d | 2015-05-20 | 2015-06-04 | PQ-CS-C-1112 | 432d | 0d | Method Statements Submittals [60 h] |
| PQ-CS-C-1912 |  | Review & Approval of MS of Steel Handrails Installation | 14d | 2015-06-01 | 2015-06-16 | PQ-CS-C-1902 SS+10d, PQ-CS-C-1902 FF+10d | 432d | 294d | Method Statements Approval [40 h] |
|  | 22 | **Smoke Curtain** |  | 2014-12-06 | 2015-01-03 |  |  |  |  |
| PQ-CS-C-1922 |  | Preparation & Submittal of MS for Smoke Curtain Installation | 14d | 2014-12-06 | 2014-12-22 | PQ-CS-C-1132 | 323d | 0d | Method Statements Submittals [60 h] |
| PQ-CS-C-1932 |  | Review & Approval of MS of Smoke Curtain Installation | 14d | 2014-12-17 | 2015-01-03 | PQ-CS-C-1922 SS+10d, PQ-CS-C-1922 FF+10d | 323d | 196d | Method Statements Approval [40 h] |
|  | 4 | **Bumper Rails** |  | 2015-06-24 | 2015-07-23 |  |  |  |  |
| PQ-CS-C-1942 |  | Preparation & Submittal of MS for Bumper Rails Installation | 14d | 2015-06-24 | 2015-07-09 | PQ-CS-C-1152 | 501d | 0d | Method Statements Submittals [60 h] |
| PQ-CS-C-1952 |  | Review & Approval of MS of Bumper Rails Installation | 14d | 2015-07-06 | 2015-07-23 | PQ-CS-C-1942 SS+10d, PQ-CS-C-1942 FF+10d | 501d |  | Method Statements Approval [40 h] |
|  | 21 | **Kerbs & Paving** |  | 2015-08-01 | 2015-08-27 |  |  |  |  |
| PQ-CS-C-1962 |  | Preparation & Submittal of MS for Kerbs & Paving Installation | 14d | 2015-08-01 | 2015-08-16 | PQ-CS-C-1172 | 421d | 0d | Method Statements Submittals [60 h] |
| PQ-CS-C-1972 |  | Review & Approval of MS of Kerbs & Paving Installation | 14d | 2015-08-12 | 2015-08-27 | PQ-CS-C-1962 SS+10d, PQ-CS-C-1962 FF+10d | 421d | 411d | Method Statements Approval [40 h] |
|  | 3 | **Steel grating system** |  | 2015-09-05 | 2015-10-05 |  |  |  |  |
| PQ-CS-C-1982 |  | Preparation & Submittal of MS for Steel Grating Installation | 14d | 2015-09-05 | 2015-09-23 | PQ-CS-C-1192 | 421d | 0d | Method Statements Submittals [60 h] |
| PQ-CS-C-1992 |  | Review & Approval of MS of Steel Grating Installation | 14d | 2015-09-16 | 2015-10-05 | PQ-CS-C-1982 SS+10d, PQ-CS-C-1982 FF+10d | 421d |  | Method Statements Approval [40 h] |
|  | 4 | **Lifts & Escalators** |  | 2014-11-05 | 2014-12-02 |  |  |  |  |
| PQ-CS-C-1362 |  | Preparation & Submittal of MS for Lift & Escalators Installation | 14d | 2014-11-05 | 2014-11-20 | PQ-CS-C-572 | 333d | 0d | Method Statements Submittals [60 h] |
| PQ-CS-C-1372 |  | Review & Approval of MS of Lift & Escalators Installation | 14d | 2014-11-17 | 2014-12-02 | PQ-CS-C-1362 SS+10d, PQ-CS-C-1362 FF+10d | 333d | 212d | Method Statements Approval [40 h] |
|  | 7 | **Specialistes & Specialist Equipments** |  | 2015-01-15 | 2015-07-02 |  |  |  |  |
|  | 1 | **Linen Chute** |  | 2015-01-15 | 2015-02-12 |  |  |  |  |
| PQ-CS-C-1342 |  | Preparation & Submittal of MS for Linen Chute Installation | 14d | 2015-01-15 | 2015-01-31 | PQ-CS-C-552 | 370d | 0d | Method Statements Submittals [60 h] |
| PQ-CS-C-1352 |  | Review & Approval of MS of Linen Chute Installation | 14d | 2015-01-27 | 2015-02-12 | PQ-CS-C-1342 SS+10d, PQ-CS-C-1342 FF+10d | 370d | 346d | Method Statements Approval [40 h] |
|  | 2 | **BMU - Building Maintenance Unit** |  | 2015-03-28 | 2015-04-23 |  |  |  |  |
| PQ-CS-C-1382 |  | Preparation & Submittal of MS for BMU Installation | 14d | 2015-03-28 | 2015-04-12 | PQ-CS-C-592 | 171d | 0d | Method Statements Submittals [60 h] |
| PQ-CS-C-1392 |  | Review & Approval of MS of BMU Installation | 14d | 2015-04-08 | 2015-04-23 | PQ-CS-C-1382 SS+10d, PQ-CS-C-1382 FF+10d | 171d | 118d | Method Statements Approval [40 h] |

| ID | WBS | Activity | Duration | Start | Finish | Predecessors | Total float | Free float | Resources |
| --- | --- | --- | --- | --- | --- | --- | --- | --- | --- |
|  | 3 | **Swimming Pools** |  | 2015-06-06 | 2015-07-02 |  |  |  |  |
| PQ-CS-C-1402 |  | Preparation & Submittal of MS for Swimming Pool Installation | 14d | 2015-06-06 | 2015-06-21 | PQ-CS-C-612 | 177d | 0d | Method Statements Submittals [60 h] |
| PQ-CS-C-1412 |  | Review & Approval of MS of Swimming Pool Installation | 14d | 2015-06-17 | 2015-07-02 | PQ-CS-C-1402 SS+10d, PQ-CS-C-1402 FF+10d | 177d | 175d | Method Statements Approval [40 h] |
|  | 8 | **Landscaping & External Works** |  | 2015-06-22 | 2015-09-08 |  |  |  |  |
|  | 1 | **Landscaping** |  | 2015-06-22 | 2015-07-21 |  |  |  |  |
| PQ-CS-C-1422 |  | Preparation & Submittal of MS for Landscaping Installation | 14d | 2015-06-22 | 2015-07-07 | PQ-CS-C-632 | 491d | 0d | Method Statements Submittals [60 h] |
| PQ-CS-C-1432 |  | Review & Approval of MS of Landscaping Installation | 14d | 2015-07-04 | 2015-07-21 | PQ-CS-C-1422 SS+10d, PQ-CS-C-1422 FF+10d | 491d | 287d | Method Statements Approval [40 h] |
|  | 2 | **Granite Wall Cladding** |  | 2015-06-22 | 2015-07-21 |  |  |  |  |
| PQ-CS-C-1442 |  | Preparation & Submittal of MS for Granite Installation | 14d | 2015-06-22 | 2015-07-07 | PQ-CS-C-652 | 463d | 0d | Method Statements Submittals [60 h] |
| PQ-CS-C-1452 |  | Review & Approval of MS of Granite Installation | 14d | 2015-07-04 | 2015-07-21 | PQ-CS-C-1442 SS+10d, PQ-CS-C-1442 FF+10d | 463d | 413d | Method Statements Approval [40 h] |
|  | 3 | **Water Fountain** |  | 2015-07-08 | 2015-08-06 |  |  |  |  |
| PQ-CS-C-1462 |  | Preparation & Submittal of MS for Water Fountain Installation | 14d | 2015-07-08 | 2015-07-26 | PQ-CS-C-672 | 483d | 0d | Method Statements Submittals [60 h] |
| PQ-CS-C-1472 |  | Review & Approval of MS of Water Fountain Installation | 14d | 2015-07-22 | 2015-08-06 | PQ-CS-C-1462 SS+10d, PQ-CS-C-1462 FF+10d | 483d | 218d | Method Statements Approval [40 h] |
|  | 7 | **Signage** |  | 2015-07-27 | 2015-08-23 |  |  |  |  |
| PQ-CS-C-1482 |  | Preparation & Submittal of MS for Signage Installation | 14d | 2015-07-27 | 2015-08-11 | PQ-CS-C-692 | 465d | 0d | Method Statements Submittals [60 h] |
| PQ-CS-C-1492 |  | Review & Approval of MS of Signage Installation | 14d | 2015-08-08 | 2015-08-23 | PQ-CS-C-1482 SS+10d, PQ-CS-C-1482 FF+10d | 465d |  | Method Statements Approval [40 h] |
|  | 8 | **Car Park Control Barriers & Bollards** |  | 2015-08-12 | 2015-09-08 |  |  |  |  |
| PQ-CS-C-1502 |  | Preparation & Submittal of MS for Control Barriers & Bollards Installation | 14d | 2015-08-12 | 2015-08-27 | PQ-CS-C-712 | 496d | 0d | Method Statements Submittals [60 h] |
| PQ-CS-C-1512 |  | Review & Approval of MS of Control Barriers & Bollards Installation | 14d | 2015-08-24 | 2015-09-08 | PQ-CS-C-1502 SS+10d, PQ-CS-C-1502 FF+10d | 496d | 94d | Method Statements Approval [40 h] |
|  | 5 | **Furniture** |  | 2015-08-29 | 2015-09-28 |  |  |  |  |
| PQ-CS-C-1522 |  | Preparation & Submittal of MS for Furniture Installation | 14d | 2015-08-29 | 2015-09-13 | PQ-CS-C-732 | 519d | 0d | Method Statements Submittals [60 h] |
| PQ-CS-C-1532 |  | Review & Approval of MS of Furniture Installation | 14d | 2015-09-09 | 2015-09-28 | PQ-CS-C-1522 SS+10d, PQ-CS-C-1522 FF+10d | 519d | 332d | Method Statements Approval [40 h] |
|  | 2 | **Shop Drawings** |  | 2014-10-02 | 2016-12-17 |  |  |  |  |
|  | 1 | **Civil/Structural** |  | 2014-10-02 | 2016-02-27 |  |  |  |  |
|  | 6 | **Slab & Beams - Shop Drawings** |  | 2014-10-02 | 2016-02-27 |  |  |  |  |
|  | 1 | **Basement 2 Floor level - Shop drawings** |  | 2014-10-02 | 2014-11-20 |  |  |  |  |
| SD-CS-B3-01 |  | Preparation & Submittals of SD & BBS of Slab & Beams at B2 | 30d | 2014-10-02 | 2014-11-09 | SD-CS-B3-2 SS | 5d | 0d | Shop Drawings Submittals [60 h] |
| SD-CS-B3-02 |  | Review & Approval of SD & BBS of Slab & Beams at B2 | 30d | 2014-10-18 | 2014-11-20 | SD-CS-B3-01 SS+10d, SD-CS-B3-01 FF+10d | 35d | 20d | Shop Drawings Approval [40 h] |

| ID | WBS | Activity | Duration | Start | Finish | Predecessors | Total float | Free float | Resources |
| --- | --- | --- | --- | --- | --- | --- | --- | --- | --- |
|  | 2 | **Basement 1 Floor level - Shop drawings** |  | 2014-10-02 | 2014-11-20 |  |  |  |  |
| SD-CS-B2-22 |  | Preparation & Submittals of SD & BBS of Slab & Beams at B1 | 30d | 2014-10-02 | 2014-11-09 | SD-CS-B3-01 SS | 5d | 0d | Shop Drawings Submittals [60 h] |
| SD-CS-B2-32 |  | Review & Approval of SD & BBS of Slab & Beams at B1 | 30d | 2014-10-18 | 2014-11-20 | SD-CS-B2-22 SS+10d, SD-CS-B2-22 FF+10d | 11d | 0d | Shop Drawings Approval [40 h] |
|  | 3 | **Ground Floor level - Shop drawings** |  | 2014-10-02 | 2014-11-20 |  |  |  |  |
| SD-CS-B1-22 |  | Preparation & Submittals of SD & BBS of Slab & Beams at GF | 30d | 2014-10-02 | 2014-11-09 | SD-CS-B2-22 SS | 5d | 0d | Shop Drawings Submittals [60 h] |
| SD-CS-B1-32 |  | Review & Approval of SD & BBS of Slab & Beams at GF | 30d | 2014-10-18 | 2014-11-20 | SD-CS-B1-22 SS+10d, SD-CS-B1-22 FF+10d | 22d | 18d | Shop Drawings Approval [40 h] |
|  | 4 | **Mezzanine Floor level - Shop drawings** |  | 2014-10-15 | 2014-11-30 |  |  |  |  |
| SD-CS-GF-22 |  | Preparation & Submittals of SD & BBS of Slab & Beams at ML | 30d | 2014-10-15 | 2014-11-18 | SD-CS-B1-22 SS+8d | 5d | 0d | Shop Drawings Submittals [60 h] |
| SD-CS-GF-32 |  | Review & Approval of SD & BBS of Slab & Beams at ML | 30d | 2014-10-27 | 2014-11-30 | SD-CS-GF-22 SS+10d, SD-CS-GF-22 FF+10d | 25d | 0d | Shop Drawings Approval [40 h] |
|  | 5 | **Level 1 Floor - Shop drawings** |  | 2014-10-25 | 2014-12-09 |  |  |  |  |
| SD-CS-L1-42 |  | Preparation & Submittals of SD & BBS of Slab & Beams at L1 | 30d | 2014-10-25 | 2014-11-27 | SD-CS-GF-22 SS+8d | 5d | 0d | Shop Drawings Submittals [60 h] |
| SD-CS-L1-52 |  | Review & Approval of SD & BBS of Slab & Beams at L1 | 30d | 2014-11-05 | 2014-12-09 | SD-CS-L1-42 SS+10d, SD-CS-L1-42 FF+10d | 26d | 0d | Shop Drawings Approval [40 h] |
|  | 6 | **Level 2 Floor - Shop drawings** |  | 2014-11-03 | 2014-12-20 |  |  |  |  |
| SD-CS-L2-62 |  | Preparation & Submittals of SD & BBS of Slab & Beams at L2 | 30d | 2014-11-03 | 2014-12-07 | SD-CS-L1-42 SS+8d | 5d | 0d | Shop Drawings Submittals [60 h] |
| SD-CS-L2-72 |  | Review & Approval of SD & BBS of Slab & Beams at L2 | 30d | 2014-11-15 | 2014-12-20 | SD-CS-L2-62 SS+10d, SD-CS-L2-62 FF+10d | 24d | 0d | Shop Drawings Approval [40 h] |
|  | 7 | **Level 3 Floor - Shop drawings** |  | 2014-11-12 | 2014-12-29 |  |  |  |  |
| SD-CS-L3-82 |  | Preparation & Submittals of SD & BBS of Slab & Beams at L3 | 30d | 2014-11-12 | 2014-12-16 | SD-CS-L2-62 SS+8d | 5d | 0d | Shop Drawings Submittals [60 h] |
| SD-CS-L3-92 |  | Review & Approval of SD & BBS of Slab & Beams at L3 | 30d | 2014-11-24 | 2014-12-29 | SD-CS-L3-82 SS+10d, SD-CS-L3-82 FF+10d | 23d | 0d | Shop Drawings Approval [40 h] |
|  | 8 | **Level 4 Floor - Shop drawings** |  | 2014-11-22 | 2015-01-07 |  |  |  |  |
| SD-CS-L4-102 |  | Preparation & Submittals of SD & BBS of Slab & Beams at L4 | 30d | 2014-11-22 | 2014-12-27 | SD-CS-L3-82 SS+8d | 5d | 0d | Shop Drawings Submittals [60 h] |
| SD-CS-L4-112 |  | Review & Approval of SD & BBS of Slab & Beams at L4 | 30d | 2014-12-03 | 2015-01-07 | SD-CS-L4-102 SS+10d, SD-CS-L4-102 FF+10d | 21d | 8d | Shop Drawings Approval [40 h] |
|  | 9 | **Level 5 Floor - Shop drawings** |  | 2014-12-01 | 2015-01-17 |  |  |  |  |
| SD-CS-L5-122 |  | Preparation & Submittals of SD & BBS of Slab & Beams at L5 | 30d | 2014-12-01 | 2015-01-05 | SD-CS-L4-102 SS+8d | 5d | 0d | Shop Drawings Submittals [60 h] |
| SD-CS-L5-132 |  | Review & Approval of SD & BBS of Slab & Beams at L5 | 30d | 2014-12-13 | 2015-01-17 | SD-CS-L5-122 SS+10d, SD-CS-L5-122 FF+10d | 19d | 0d | Shop Drawings Approval [40 h] |

| ID | WBS | Activity | Duration | Start | Finish | Predecessors | Total float | Free float | Resources |
| --- | --- | --- | --- | --- | --- | --- | --- | --- | --- |
|  | 10 | **Level 6 Floor - Shop drawings** |  | 2014-12-10 | 2015-01-26 |  |  |  |  |
| SD-CS-L6-142 |  | Preparation & Submittals of SD & BBS of Slab & Beams at 6 | 30d | 2014-12-10 | 2015-01-14 | SD-CS-L5-122 SS+8d | 5d | 0d | Shop Drawings Submittals [60 h] |
| SD-CS-L6-152 |  | Review & Approval of SD & BBS of Slab & Beams at L6 | 30d | 2014-12-23 | 2015-01-26 | SD-CS-L6-142 SS+10d, SD-CS-L6-142 FF+10d | 21d | 0d | Shop Drawings Approval [40 h] |
|  | 11 | **Level 7 Floor - Shop drawings** |  | 2014-12-21 | 2015-02-04 |  |  |  |  |
| SD-CS-L7-162 |  | Preparation & Submittals of SD & BBS of Slab & Beams at L7 | 30d | 2014-12-21 | 2015-01-24 | SD-CS-L6-142 SS+8d | 5d | 0d | Shop Drawings Submittals [60 h] |
| SD-CS-L7-172 |  | Review & Approval of SD & BBS of Slab & Beams at L7 | 30d | 2015-01-01 | 2015-02-04 | SD-CS-L7-162 SS+10d, SD-CS-L7-162 FF+10d | 19d | 0d | Shop Drawings Approval [40 h] |
|  | 12 | **Level 8 Floor - Shop drawings** |  | 2014-12-27 | 2015-02-11 |  |  |  |  |
| SD-CS-L8-182 |  | Preparation & Submittals of SD & BBS of Slab & Beams at L8 | 30d | 2014-12-27 | 2015-01-29 | SD-CS-L7-162 SS+5d | 5d | 0d | Shop Drawings Submittals [60 h] |
| SD-CS-L8-192 |  | Review & Approval of SD & BBS of Slab & Beams at L8 | 30d | 2015-01-07 | 2015-02-11 | SD-CS-L8-182 SS+10d, SD-CS-L8-182 FF+10d | 20d | 0d | Shop Drawings Approval [40 h] |
|  | 13 | **Level 9 Floor - Shop drawings** |  | 2015-01-01 | 2015-02-17 |  |  |  |  |
| SD-CS-L9-202 |  | Preparation & Submittals of SD & BBS of Slab & Beams at L9 | 30d | 2015-01-01 | 2015-02-04 | SD-CS-L8-182 SS+5d | 5d | 0d | Shop Drawings Submittals [60 h] |
| SD-CS-L9-212 |  | Review & Approval of SD & BBS of Slab & Beams at L9 | 30d | 2015-01-13 | 2015-02-17 | SD-CS-L9-202 SS+10d, SD-CS-L9-202 FF+10d | 21d | 0d | Shop Drawings Approval [40 h] |
|  | 14 | **Level 10 Floor - Shop drawings** |  | 2015-01-07 | 2015-02-23 |  |  |  |  |
| SD-CS-L10-222 |  | Preparation & Submittals of SD & BBS of Slab & Beams at L10 | 30d | 2015-01-07 | 2015-02-11 | SD-CS-L9-202 SS+5d | 5d | 0d | Shop Drawings Submittals [60 h] |
| SD-CS-L10-232 |  | Review & Approval of SD & BBS of Slab & Beams at L10 | 30d | 2015-01-19 | 2015-02-23 | SD-CS-L10-222 SS+10d, SD-CS-L10-222 FF+10d | 22d | 0d | Shop Drawings Approval [40 h] |
|  | 15 | **Level 11 Floor - Shop drawings** |  | 2015-01-13 | 2015-03-01 |  |  |  |  |
| SD-CS-L11-242 |  | Preparation & Submittals of SD & BBS of Slab & Beams at L11 | 30d | 2015-01-13 | 2015-02-17 | SD-CS-L10-222 SS+5d | 5d | 0d | Shop Drawings Submittals [60 h] |
| SD-CS-L11-252 |  | Review & Approval of SD & BBS of Slab & Beams at L11 | 30d | 2015-01-25 | 2015-03-01 | SD-CS-L11-242 SS+10d, SD-CS-L11-242 FF+10d | 23d | 0d | Shop Drawings Approval [40 h] |
|  | 16 | **Level 12 Floor - Shop drawings** |  | 2015-01-19 | 2015-03-07 |  |  |  |  |
| SD-CS-L12-262 |  | Preparation & Submittals of SD & BBS of Slab & Beams at L12 | 30d | 2015-01-19 | 2015-02-23 | SD-CS-L11-242 SS+5d | 5d | 0d | Shop Drawings Submittals [60 h] |
| SD-CS-L12-272 |  | Review & Approval of SD & BBS of Slab & Beams at L12 | 30d | 2015-01-31 | 2015-03-07 | SD-CS-L12-262 SS+10d, SD-CS-L12-262 FF+10d | 24d | 0d | Shop Drawings Approval [40 h] |
|  | 17 | **Level 13 Floor - Shop drawings** |  | 2015-01-25 | 2015-03-12 |  |  |  |  |
| SD-CS-L13-282 |  | Preparation & Submittals of SD & BBS of Slab & Beams at L13 | 30d | 2015-01-25 | 2015-03-01 | SD-CS-L12-262 SS+5d | 5d | 0d | Shop Drawings Submittals [60 h] |
| SD-CS-L13-292 |  | Review & Approval of SD & BBS of Slab & Beams at L13 | 30d | 2015-02-05 | 2015-03-12 | SD-CS-L13-282 SS+10d, SD-CS-L13-282 FF+10d | 25d | 0d | Shop Drawings Approval [40 h] |

| ID | WBS | Activity | Duration | Start | Finish | Predecessors | Total float | Free float | Resources |
| --- | --- | --- | --- | --- | --- | --- | --- | --- | --- |
|  | 18 | **Level 14 Floor - Shop drawings** |  | 2015-01-31 | 2015-03-18 |  |  |  |  |
| SD-CS-L14-302 |  | Preparation & Submittals of SD & BBS of Slab & Beams at L14 | 30d | 2015-01-31 | 2015-03-07 | SD-CS-L13-282 SS+5d | 5d | 0d | Shop Drawings Submittals [60 h] |
| SD-CS-L14-312 |  | Review & Approval of SD & BBS of Slab & Beams at L14 | 30d | 2015-02-12 | 2015-03-18 | SD-CS-L14-302 SS+10d, SD-CS-L14-302 FF+10d | 26d | 0d | Shop Drawings Approval [40 h] |
|  | 19 | **Level 15 Floor - Shop drawings** |  | 2015-02-05 | 2015-03-24 |  |  |  |  |
| SD-CS-L15-322 |  | Preparation & Submittals of SD & BBS of Slab & Beams at L15 | 30d | 2015-02-05 | 2015-03-12 | SD-CS-L14-302 SS+5d | 5d | 0d | Shop Drawings Submittals [60 h] |
| SD-CS-L15-332 |  | Review & Approval of SD & BBS of Slab & Beams at L15 | 30d | 2015-02-18 | 2015-03-24 | SD-CS-L15-322 SS+10d, SD-CS-L15-322 FF+10d | 27d | 0d | Shop Drawings Approval [40 h] |
|  | 20 | **Level 16 Floor - Shop drawings** |  | 2015-02-12 | 2015-03-30 |  |  |  |  |
| SD-CS-L16-342 |  | Preparation & Submittals of SD & BBS of Slab & Beams at L16 | 30d | 2015-02-12 | 2015-03-18 | SD-CS-L15-322 SS+5d | 5d | 0d | Shop Drawings Submittals [60 h] |
| SD-CS-L16-352 |  | Review & Approval of SD & BBS of Slab & Beams at L16 | 30d | 2015-02-24 | 2015-03-30 | SD-CS-L16-342 SS+10d, SD-CS-L16-342 FF+10d | 28d | 0d | Shop Drawings Approval [40 h] |
|  | 21 | **Level 17 Floor - Shop drawings** |  | 2015-02-18 | 2015-04-05 |  |  |  |  |
| SD-CS-L17-362 |  | Preparation & Submittals of SD & BBS of Slab & Beams at L17 | 30d | 2015-02-18 | 2015-03-24 | SD-CS-L16-342 SS+5d | 5d | 0d | Shop Drawings Submittals [60 h] |
| SD-CS-L17-372 |  | Review & Approval of SD & BBS of Slab & Beams at L17 | 30d | 2015-03-02 | 2015-04-05 | SD-CS-L17-362 SS+10d, SD-CS-L17-362 FF+10d | 29d | 0d | Shop Drawings Approval [40 h] |
|  | 22 | **Level 18 Floor - Shop drawings** |  | 2015-02-24 | 2015-04-11 |  |  |  |  |
| SD-CS-L18-382 |  | Preparation & Submittals of SD & BBS of Slab & Beams at L18 | 30d | 2015-02-24 | 2015-03-30 | SD-CS-L17-362 SS+5d | 5d | 0d | Shop Drawings Submittals [60 h] |
| SD-CS-L18-392 |  | Review & Approval of SD & BBS of Slab & Beams at L18 | 30d | 2015-03-08 | 2015-04-11 | SD-CS-L18-382 SS+10d, SD-CS-L18-382 FF+10d | 31d | 0d | Shop Drawings Approval [40 h] |
|  | 23 | **Level 19 Floor - Shop drawings** |  | 2015-03-02 | 2015-04-16 |  |  |  |  |
| SD-CS-L19-402 |  | Preparation & Submittals of SD & BBS of Slab & Beams at L19 | 30d | 2015-03-02 | 2015-04-05 | SD-CS-L18-382 SS+5d | 5d | 0d | Shop Drawings Submittals [60 h] |
| SD-CS-L19-412 |  | Review & Approval of SD & BBS of Slab & Beams at L19 | 30d | 2015-03-14 | 2015-04-16 | SD-CS-L19-402 SS+10d, SD-CS-L19-402 FF+10d | 33d | 0d | Shop Drawings Approval [40 h] |
|  | 24 | **Level 20 Floor - Shop drawings** |  | 2015-03-08 | 2015-04-22 |  |  |  |  |
| SD-CS-L20-422 |  | Preparation & Submittals of SD & BBS of Slab & Beams at L0 | 30d | 2015-03-08 | 2015-04-11 | SD-CS-L19-402 SS+5d | 5d | 0d | Shop Drawings Submittals [60 h] |
| SD-CS-L20-432 |  | Review & Approval of SD & BBS of Slab & Beams at L20 | 30d | 2015-03-19 | 2015-04-22 | SD-CS-L20-422 SS+10d, SD-CS-L20-422 FF+10d | 34d | 0d | Shop Drawings Approval [40 h] |
|  | 25 | **Level 21 Floor - Shop drawings** |  | 2015-03-17 | 2015-05-02 |  |  |  |  |
| SD-CS-L21-442 |  | Preparation & Submittals of SD & BBS of Slab & Beams at L21 | 30d | 2015-03-17 | 2015-04-20 | SD-CS-L20-422 SS+8d | 5d | 0d | Shop Drawings Submittals [60 h] |
| SD-CS-L21-452 |  | Review & Approval of SD & BBS of Slab & Beams at L21 | 30d | 2015-03-29 | 2015-05-02 | SD-CS-L21-442 SS+10d, SD-CS-L21-442 FF+10d | 32d | 0d | Shop Drawings Approval [40 h] |

| ID | WBS | Activity | Duration | Start | Finish | Predecessors | Total float | Free float | Resources |
| --- | --- | --- | --- | --- | --- | --- | --- | --- | --- |
|  | 26 | **Level 22 Floor - Shop drawings** |  | 2015-03-26 | 2015-05-11 |  |  |  |  |
| SD-CS-L22-462 |  | Preparation & Submittals of SD & BBS of Slab & Beams at L22 | 30d | 2015-03-26 | 2015-04-29 | SD-CS-L21-442 SS+8d | 5d | 0d | Shop Drawings Submittals [60 h] |
| SD-CS-L22-472 |  | Review & Approval of SD & BBS of Slab & Beams at L22 | 30d | 2015-04-07 | 2015-05-11 | SD-CS-L22-462 SS+10d, SD-CS-L22-462 FF+10d | 30d | 0d | Shop Drawings Approval [40 h] |
|  | 27 | **Level 23 Floor - Shop drawings** |  | 2015-04-05 | 2015-05-20 |  |  |  |  |
| SD-CS-L23-482 |  | Preparation & Submittals of SD & BBS of Slab & Beams at L23 | 30d | 2015-04-05 | 2015-05-09 | SD-CS-L22-462 SS+8d | 5d | 0d | Shop Drawings Submittals [60 h] |
| SD-CS-L23-492 |  | Review & Approval of SD & BBS of Slab & Beams at L23 | 30d | 2015-04-16 | 2015-05-20 | SD-CS-L23-482 SS+10d, SD-CS-L23-482 FF+10d | 28d | 0d | Shop Drawings Approval [40 h] |
|  | 28 | **Level 24 Floor - Shop drawings** |  | 2015-04-14 | 2015-05-30 |  |  |  |  |
| SD-CS-L24-502 |  | Preparation & Submittals of SD & BBS of Slab & Beams at L24 | 30d | 2015-04-14 | 2015-05-18 | SD-CS-L23-482 SS+8d | 5d | 0d | Shop Drawings Submittals [60 h] |
| SD-CS-L24-512 |  | Review & Approval of SD & BBS of Slab & Beams at L24 | 30d | 2015-04-26 | 2015-05-30 | SD-CS-L24-502 SS+10d, SD-CS-L24-502 FF+10d | 28d | 0d | Shop Drawings Approval [40 h] |
|  | 29 | **Level 25 Floor - Shop drawings** |  | 2015-04-23 | 2015-06-08 |  |  |  |  |
| SD-CS-L25-522 |  | Preparation & Submittals of SD & BBS of Slab & Beams at L25 | 30d | 2015-04-23 | 2015-05-27 | SD-CS-L24-502 SS+8d | 5d | 0d | Shop Drawings Submittals [60 h] |
| SD-CS-L25-532 |  | Review & Approval of SD & BBS of Slab & Beams at L25 | 30d | 2015-05-05 | 2015-06-08 | SD-CS-L25-522 SS+10d, SD-CS-L25-522 FF+10d | 26d | 0d | Shop Drawings Approval [40 h] |
|  | 30 | **Level 26 Floor - Shop drawings** |  | 2015-05-03 | 2015-06-17 |  |  |  |  |
| SD-CS-L26-542 |  | Preparation & Submittals of SD & BBS of Slab & Beams at L26 | 30d | 2015-05-03 | 2015-06-06 | SD-CS-L25-522 SS+8d | 5d | 0d | Shop Drawings Submittals [60 h] |
| SD-CS-L26-552 |  | Review & Approval of SD & BBS of Slab & Beams at L26 | 30d | 2015-05-14 | 2015-06-17 | SD-CS-L26-542 SS+10d, SD-CS-L26-542 FF+10d | 23d | 0d | Shop Drawings Approval [40 h] |
|  | 31 | **Level 27 Floor - Shop drawings** |  | 2015-05-12 | 2015-06-27 |  |  |  |  |
| SD-CS-L27-562 |  | Preparation & Submittals of SD & BBS of Slab & Beams at L27 | 30d | 2015-05-12 | 2015-06-15 | SD-CS-L26-542 SS+8d | 5d | 0d | Shop Drawings Submittals [60 h] |
| SD-CS-L27-572 |  | Review & Approval of SD & BBS of Slab & Beams at L27 | 30d | 2015-05-24 | 2015-06-27 | SD-CS-L27-562 SS+10d, SD-CS-L27-562 FF+10d | 20d | 0d | Shop Drawings Approval [40 h] |
|  | 32 | **Level 28 Floor - Shop drawings** |  | 2015-05-21 | 2015-07-06 |  |  |  |  |
| SD-CS-L28-582 |  | Preparation & Submittals of SD & BBS of Slab & Beams at L28 | 30d | 2015-05-21 | 2015-06-24 | SD-CS-L27-562 SS+8d | 5d | 0d | Shop Drawings Submittals [60 h] |
| SD-CS-L28-592 |  | Review & Approval of SD & BBS of Slab & Beams at L28 | 30d | 2015-06-02 | 2015-07-06 | SD-CS-L28-582 SS+10d, SD-CS-L28-582 FF+10d | 18d | 0d | Shop Drawings Approval [40 h] |
|  | 33 | **Level 29 Floor - Shop drawings** |  | 2015-05-31 | 2015-07-18 |  |  |  |  |
| SD-CS-L29-602 |  | Preparation & Submittals of SD & BBS of Slab & Beams at L29 | 30d | 2015-05-31 | 2015-07-04 | SD-CS-L28-582 SS+8d | 5d | 0d | Shop Drawings Submittals [60 h] |
| SD-CS-L29-612 |  | Review & Approval of SD & BBS of Slab & Beams at L29 | 30d | 2015-06-11 | 2015-07-18 | SD-CS-L29-602 SS+10d, SD-CS-L29-602 FF+10d | 16d | 0d | Shop Drawings Approval [40 h] |

| ID | WBS | Activity | Duration | Start | Finish | Predecessors | Total float | Free float | Resources |
| --- | --- | --- | --- | --- | --- | --- | --- | --- | --- |
|  | 34 | **Level 30 Floor - Shop drawings** |  | 2015-06-09 | 2015-07-27 |  |  |  |  |
| SD-CS-L30-622 |  | Preparation & Submittals of SD & BBS of Slab & Beams at L30 | 30d | 2015-06-09 | 2015-07-13 | SD-CS-L29-602 SS+8d | 5d | 0d | Shop Drawings Submittals [60 h] |
| SD-CS-L30-632 |  | Review & Approval of SD of Slab & Beams at L30 | 30d | 2015-06-21 | 2015-07-27 | SD-CS-L30-622 SS+10d, SD-CS-L30-622 FF+10d | 14d | 0d | Shop Drawings Approval [40 h] |
|  | 35 | **Level 31 Floor - Shop drawings** |  | 2015-06-13 | 2015-07-30 |  |  |  |  |
| SD-CS-L31-642 |  | Preparation & Submittals of SD & BBS of Slab & Beams at L31 | 30d | 2015-06-13 | 2015-07-19 | SD-CS-L30-622 SS+3d | 5d | 0d | Shop Drawings Submittals [60 h] |
| SD-CS-L31-652 |  | Review & Approval of SD & BBS of Slab & Beams at L31 | 30d | 2015-06-24 | 2015-07-30 | SD-CS-L31-642 SS+10d, SD-CS-L31-642 FF+10d | 17d | 0d | Shop Drawings Approval [40 h] |
|  | 36 | **Level 32 Floor - Shop drawings** |  | 2015-06-22 | 2015-08-09 |  |  |  |  |
| SD-CS-L32-662 |  | Preparation & Submittals of SD of Slab & Beams at L32 | 30d | 2015-06-22 | 2015-07-28 | SD-CS-L31-642 SS+8d | 5d | 0d | Shop Drawings Submittals [60 h] |
| SD-CS-L32-672 |  | Review & Approval of SD & BBS of Slab & Beams at L32 | 30d | 2015-07-04 | 2015-08-09 | SD-CS-L32-662 SS+10d, SD-CS-L32-662 FF+10d | 15d | 0d | Shop Drawings Approval [40 h] |
|  | 37 | **Level 33 Floor - Shop drawings** |  | 2015-07-01 | 2015-08-18 |  |  |  |  |
| SD-CS-L33-682 |  | Preparation & Submittals of SD & BBS of Slab & Beams at L33 | 30d | 2015-07-01 | 2015-08-06 | SD-CS-L32-662 SS+8d | 5d | 0d | Shop Drawings Submittals [60 h] |
| SD-CS-L33-692 |  | Review & Approval of SD & BBS of Slab & Beams at L33 | 30d | 2015-07-13 | 2015-08-18 | SD-CS-L33-682 SS+10d, SD-CS-L33-682 FF+10d | 16d | 0d | Shop Drawings Approval [40 h] |
|  | 38 | **Level 34 Floor - Shop drawings** |  | 2015-07-11 | 2015-08-27 |  |  |  |  |
| SD-CS-L34-702 |  | Preparation & Submittals of SD & BBS of Slab & Beams at L34 | 30d | 2015-07-11 | 2015-08-16 | SD-CS-L33-682 SS+8d | 5d | 0d | Shop Drawings Submittals [60 h] |
| SD-CS-L34-712 |  | Review & Approval of SD & BBS of Slab & Beams at L34 | 30d | 2015-07-25 | 2015-08-27 | SD-CS-L34-702 SS+10d, SD-CS-L34-702 FF+10d | 14d | 0d | Shop Drawings Approval [40 h] |
|  | 39 | **Level 35 Floor - Shop drawings** |  | 2015-07-22 | 2015-09-06 |  |  |  |  |
| SD-CS-L35-722 |  | Preparation & Submittals of SD & BBS of Slab & Beams at L35 | 30d | 2015-07-22 | 2015-08-25 | SD-CS-L34-702 SS+8d | 5d | 0d | Shop Drawings Submittals [60 h] |
| SD-CS-L35-732 |  | Review & Approval of SD & BBS of Slab & Beams at L35 | 30d | 2015-08-03 | 2015-09-06 | SD-CS-L35-722 SS+10d, SD-CS-L35-722 FF+10d | 11d | 0d | Shop Drawings Approval [40 h] |
|  | 40 | **Level 36 Floor - Shop drawings** |  | 2015-08-01 | 2015-09-15 |  |  |  |  |
| SD-CS-L36-742 |  | Preparation & Submittals of SD & BBS of Slab & Beams at L36 | 30d | 2015-08-01 | 2015-09-03 | SD-CS-L35-722 SS+8d | 5d | 0d | Shop Drawings Submittals [60 h] |
| SD-CS-L36-752 |  | Review & Approval of SD & BBS of Slab & Beams at L36 | 30d | 2015-08-12 | 2015-09-15 | SD-CS-L36-742 SS+10d, SD-CS-L36-742 FF+10d | 7d | 0d | Shop Drawings Approval [40 h] |
|  | 41 | **Level 37 Floor - Shop drawings** |  | 2015-08-10 | 2015-09-28 |  |  |  |  |
| SD-CS-L37-762 |  | Preparation & Submittals of SD & BBS of Slab & Beams at L37 | 30d | 2015-08-10 | 2015-09-13 | SD-CS-L36-742 SS+8d | 5d | 0d | Shop Drawings Submittals [60 h] |
| SD-CS-L37-772 |  | Review & Approval of SD & BBS of Slab & Beams at L37 | 30d | 2015-08-22 | 2015-09-28 | SD-CS-L37-762 SS+10d, SD-CS-L37-762 FF+10d | 5d | 0d | Shop Drawings Approval [40 h] |

| ID | WBS | Activity | Duration | Start | Finish | Predecessors | Total float | Free float | Resources |
| --- | --- | --- | --- | --- | --- | --- | --- | --- | --- |
|  | 42 | **Level 38 Floor - Shop drawings** |  | 2015-08-19 | 2015-10-07 |  |  |  |  |
| SD-CS-L38-782 |  | Preparation & Submittals of SD & BBS of Slab & Beams at L38 | 30d | 2015-08-19 | 2015-09-26 | SD-CS-L37-762 SS+8d | 5d | 0d | Shop Drawings Submittals [60 h] |
| SD-CS-L38-792 |  | Review & Approval of SD & BBS of Slab & Beams at L38 | 30d | 2015-08-31 | 2015-10-07 | SD-CS-L38-782 SS+10d, SD-CS-L38-782 FF+10d | 5d | 0d | Shop Drawings Approval [40 h] |
|  | 43 | **Level 39 Floor - Shop drawings** |  | 2015-08-29 | 2015-10-17 |  |  |  |  |
| SD-CS-L39-802 |  | Preparation & Submittals of SD & BBS of Slab & Beams at L39 | 30d | 2015-08-29 | 2015-10-05 | SD-CS-L38-782 SS+8d | 5d | 0d | Shop Drawings Submittals [60 h] |
| SD-CS-L39-812 |  | Review & Approval of SD & BBS of Slab & Beams at L39 | 30d | 2015-09-09 | 2015-10-17 | SD-CS-L39-802 SS+10d, SD-CS-L39-802 FF+10d | 32d | 0d | Shop Drawings Approval [40 h] |
|  | 44 | **Level 40 Floor - Shop drawings** |  | 2015-09-07 | 2015-10-26 |  |  |  |  |
| SD-CS-L40-822 |  | Preparation & Submittals of SD & BBS of Slab & Beams at L40 | 30d | 2015-09-07 | 2015-10-14 | SD-CS-L39-802 SS+8d | 5d | 0d | Shop Drawings Submittals [60 h] |
| SD-CS-L40-832 |  | Review & Approval of SD & BBS of Slab & Beams at L40 | 30d | 2015-09-19 | 2015-10-26 | SD-CS-L40-822 SS+10d, SD-CS-L40-822 FF+10d | 31d | 0d | Shop Drawings Approval [40 h] |
|  | 45 | **Level 41 Floor - Shop drawings** |  | 2015-09-16 | 2015-11-04 |  |  |  |  |
| SD-CS-L41-842 |  | Preparation & Submittals of SD & BBS of Slab & Beams at L41 | 30d | 2015-09-16 | 2015-10-24 | SD-CS-L40-822 SS+8d | 5d | 0d | Shop Drawings Submittals [60 h] |
| SD-CS-L41-852 |  | Review & Approval of SD & BBS of Slab & Beams at L41 | 30d | 2015-10-01 | 2015-11-04 | SD-CS-L41-842 SS+10d, SD-CS-L41-842 FF+10d | 29d | 0d | Shop Drawings Approval [40 h] |
|  | 46 | **Level 42 Floor - Shop drawings** |  | 2015-09-29 | 2015-11-14 |  |  |  |  |
| SD-CS-L42-862 |  | Preparation & Submittals of SD & BBS of Slab & Beams at L42 | 30d | 2015-09-29 | 2015-11-02 | SD-CS-L41-842 SS+8d | 5d | 0d | Shop Drawings Submittals [60 h] |
| SD-CS-L42-872 |  | Review & Approval of SD & BBS of Slab & Beams at L42 | 30d | 2015-10-11 | 2015-11-14 | SD-CS-L42-862 SS+10d, SD-CS-L42-862 FF+10d | 27d | 0d | Shop Drawings Approval [40 h] |
|  | 47 | **Level 43 Floor - Shop drawings** |  | 2015-10-08 | 2015-11-23 |  |  |  |  |
| SD-CS-L43-882 |  | Preparation & Submittals of SD & BBS of Slab & Beams at L43 | 30d | 2015-10-08 | 2015-11-11 | SD-CS-L42-862 SS+8d | 5d | 0d | Shop Drawings Submittals [60 h] |
| SD-CS-L43-892 |  | Review & Approval of SD & BBS of Slab & Beams at L43 | 30d | 2015-10-20 | 2015-11-23 | SD-CS-L43-882 SS+10d, SD-CS-L43-882 FF+10d | 24d | 0d | Shop Drawings Approval [40 h] |
|  | 48 | **Level 44 Floor - Shop drawings** |  | 2015-10-18 | 2015-12-02 |  |  |  |  |
| SD-CS-L44-902 |  | Preparation & Submittals of SD & BBS of Slab & Beams at L44 | 30d | 2015-10-18 | 2015-11-21 | SD-CS-L43-882 SS+8d | 5d | 0d | Shop Drawings Submittals [60 h] |
| SD-CS-L44-912 |  | Review & Approval of SD & BBS of Slab & Beams at L44 | 30d | 2015-10-29 | 2015-12-02 | SD-CS-L44-902 SS+10d, SD-CS-L44-902 FF+10d | 22d | 0d | Shop Drawings Approval [40 h] |
|  | 49 | **Level 45 Floor - Shop drawings** |  | 2015-10-27 | 2015-12-12 |  |  |  |  |
| SD-CS-L45-922 |  | Preparation & Submittals of SD & BBS of Slab & Beams at L45 | 30d | 2015-10-27 | 2015-11-30 | SD-CS-L44-902 SS+8d | 5d | 0d | Shop Drawings Submittals [60 h] |
| SD-CS-L45-932 |  | Review & Approval of SD & BBS of Slab & Beams at L45 | 30d | 2015-11-08 | 2015-12-12 | SD-CS-L45-922 SS+10d, SD-CS-L45-922 FF+10d | 20d | 0d | Shop Drawings Approval [40 h] |

| ID | WBS | Activity | Duration | Start | Finish | Predecessors | Total float | Free float | Resources |
| --- | --- | --- | --- | --- | --- | --- | --- | --- | --- |
|  | 50 | **Level 46 Floor - Shop drawings** |  | 2015-11-05 | 2015-12-22 |  |  |  |  |
| SD-CS-L46-942 |  | Preparation & Submittals of SD & BBS of Slab & Beams at L46 | 30d | 2015-11-05 | 2015-12-09 | SD-CS-L45-922 SS+8d | 5d | 0d | Shop Drawings Submittals [60 h] |
| SD-CS-L46-952 |  | Review & Approval of SD & BBS of Slab & Beams at L46 | 30d | 2015-11-17 | 2015-12-22 | SD-CS-L46-942 SS+10d, SD-CS-L46-942 FF+10d | 18d | 0d | Shop Drawings Approval [40 h] |
|  | 53 | **Level 47 Floor - Shop drawings** |  | 2015-11-15 | 2015-12-31 |  |  |  |  |
| SD-CS-L47-962 |  | Preparation & Submittals of SD & BBS of Slab & Beams at L47 | 30d | 2015-11-15 | 2015-12-20 | SD-CS-L46-942 SS+8d | 5d | 0d | Shop Drawings Submittals [60 h] |
| SD-CS-L47-972 |  | Review & Approval of SD & BBS of Slab & Beams at L47 | 30d | 2015-11-26 | 2015-12-31 | SD-CS-L47-962 SS+10d, SD-CS-L47-962 FF+10d | 17d | 0d | Shop Drawings Approval [40 h] |
|  | 51 | **Level 48 Floor - Shop drawings** |  | 2015-11-24 | 2016-01-10 |  |  |  |  |
| SD-CS-L48-982 |  | Preparation & Submittals of SD & BBS of Slab & Beams at L48 | 30d | 2015-11-24 | 2015-12-29 | SD-CS-L47-962 SS+8d | 5d | 0d | Shop Drawings Submittals [60 h] |
| SD-CS-L48-992 |  | Review & Approval of SD & BBS of Slab & Beams at L48 | 30d | 2015-12-06 | 2016-01-10 | SD-CS-L48-982 SS+10d, SD-CS-L48-982 FF+10d | 15d | 0d | Shop Drawings Approval [40 h] |
|  | 52 | **Level 49 Floor - Shop drawings** |  | 2015-12-03 | 2016-01-19 |  |  |  |  |
| SD-CS-L49-1002 |  | Preparation & Submittals of SD & BBS of Slab & Beams at L49 | 30d | 2015-12-03 | 2016-01-07 | SD-CS-L48-982 SS+8d | 5d | 0d | Shop Drawings Submittals [60 h] |
| SD-CS-L49-1012 |  | Review & Approval of SD & BBS of Slab & Beams at L49 | 30d | 2015-12-15 | 2016-01-19 | SD-CS-L49-1002 SS+10d, SD-CS-L49-1002 FF+10d | 13d | 0d | Shop Drawings Approval [40 h] |
|  | 54 | **Level 50 Floor - Shop drawings** |  | 2015-12-13 | 2016-01-28 |  |  |  |  |
| SD-CS-L50-1022 |  | Preparation & Submittals of SD & BBS of Slab & Beams at L50 | 30d | 2015-12-13 | 2016-01-17 | SD-CS-L49-1002 SS+8d | 5d | 0d | Shop Drawings Submittals [60 h] |
| SD-CS-L50-1032 |  | Review & Approval of SD & BBS of Slab & Beams at L50 | 30d | 2015-12-26 | 2016-01-28 | SD-CS-L50-1022 SS+10d, SD-CS-L50-1022 FF+10d | 11d | 0d | Shop Drawings Approval [40 h] |
|  | 55 | **Level 51 Floor - Shop drawings** |  | 2015-12-23 | 2016-02-07 |  |  |  |  |
| SD-CS-L51-1042 |  | Preparation & Submittals of SD & BBS of Slab & Beams at L51 | 30d | 2015-12-23 | 2016-01-26 | SD-CS-L50-1022 SS+8d | 5d | 0d | Shop Drawings Submittals [60 h] |
| SD-CS-L51-1052 |  | Review & Approval of SD & BBS of Slab & Beams at L51 | 30d | 2016-01-04 | 2016-02-07 | SD-CS-L51-1042 SS+10d, SD-CS-L51-1042 FF+10d | 9d | 0d | Shop Drawings Approval [40 h] |
|  | 56 | **Lower Roof Floor - Shop drawings** |  | 2016-01-02 | 2016-02-17 |  |  |  |  |
| SD-CS-L51-1402 |  | Preparation & Submittals of SD & BBS of Slab & Beams at Lowe Roof | 30d | 2016-01-02 | 2016-02-04 | SD-CS-L51-1042 SS+8d | 5d | 0d | Shop Drawings Submittals [60 h] |
| SD-CS-L51-1412 |  | Review & Approval of SD & BBS of Slab & Beams at Lower Roof | 30d | 2016-01-13 | 2016-02-17 | SD-CS-L51-1402 SS+10d, SD-CS-L51-1402 FF+10d | 7d | 0d | Shop Drawings Approval [40 h] |
|  | 57 | **Top Roof Floor - Shop drawings** |  | 2016-01-11 | 2016-02-27 |  |  |  |  |
| SD-CS-L51-1422 |  | Preparation & Submittals of SD & BBS of Slab & Beams at Top Roof | 30d | 2016-01-11 | 2016-02-15 | SD-CS-L51-1402 SS+8d | 5d | 0d | Shop Drawings Submittals [60 h] |
| SD-CS-L51-1432 |  | Review & Approval of SD & BBS of Slab & Beams at Top Roof | 30d | 2016-01-23 | 2016-02-27 | SD-CS-L51-1422 SS+10d, SD-CS-L51-1422 FF+10d | 5d | 0d | Shop Drawings Approval [40 h] |

| ID | WBS | Activity | Duration | Start | Finish | Predecessors | Total float | Free float | Resources |
| --- | --- | --- | --- | --- | --- | --- | --- | --- | --- |
|  | R | **Raft - Shop drawings** |  | 2014-10-02 | 2014-11-09 |  |  |  |  |
| SD-CS-B3-2 |  | Preparation & Submittals of SD & BBS of Raft | 20d | 2014-10-02 | 2014-10-28 | G-CM-001 | 1d | 0d | Shop Drawings Submittals [60 h] |
| SD-CS-B3-22 |  | Preparation & Submittals of General Arrangement Drawings | 14d | 2014-10-02 | 2014-10-21 | G-CM-001 | 5d | 0d | Shop Drawings Submittals [60 h] |
| SD-CS-B3-12 |  | Review & Approval of SD & BBS of Raft | 20d | 2014-10-18 | 2014-11-09 | SD-CS-B3-2 SS+10d, SD-CS-B3-2 FF+10d | 1d |  | Shop Drawings Approval [40 h] |
| SD-CS-B3-32 |  | Review & Approval of General Arrangement Drawings | 14d | 2014-10-18 | 2014-11-02 | SD-CS-B3-22 SS+10d, SD-CS-B3-22 FF+10d | 5d | 4d | Shop Drawings Approval [40 h] |
|  | 1 | **Core Walls Drawings** |  | 2014-10-11 | 2015-10-26 |  |  |  |  |
|  | 1 | **Raft to Ground - Shop drawings** |  | 2014-10-11 | 2014-11-25 |  |  |  |  |
| SD-CS-L0-1062 |  | Preparation & Submittals of SD & BBS of Core Walls from Raft level to B1 | 30d | 2014-10-11 | 2014-11-13 | PQ-CS-C-12 SS | 8d | 0d | Shop Drawings Submittals [60 h] |
| SD-CS-L0-1072 |  | Review & Approval of SD & BBS of Core Walls from Raft level to B1 | 30d | 2014-10-22 | 2014-11-25 | SD-CS-L0-1062 SS+10d, SD-CS-L0-1062 FF+10d | 21d | 6d | Shop Drawings Approval [40 h] |
|  | 2 | **Ground to Level 4 - Shop drawings** |  | 2014-10-22 | 2014-12-07 |  |  |  |  |
| SD-CS-L4-1082 |  | Preparation & Submittals of SD & BBS of Core Walls from B1 to L4 | 30d | 2014-10-22 | 2014-11-25 | SD-CS-L0-1062 SS+10d | 8d | 0d | Shop Drawings Submittals [60 h] |
| SD-CS-L4-1092 |  | Review & Approval of SD & BBS of Core Walls from B1 to L4 | 30d | 2014-11-03 | 2014-12-07 | SD-CS-L4-1082 SS+10d, SD-CS-L4-1082 FF+10d | 8d | 4d | Shop Drawings Approval [40 h] |
|  | 3 | **Level 4 to level 17 - Shop drawings** |  | 2014-11-26 | 2015-01-12 |  |  |  |  |
| SD-CS-L17-1102 |  | Preparation & Submittals of SD & BBS of Core Walls from L4 to L17 | 30d | 2014-11-26 | 2014-12-31 | SD-CS-L4-1082 | 17d | 0d | Shop Drawings Submittals [60 h] |
| SD-CS-L17-1112 |  | Preparation & Submittals of SD & BBS of Core Walls from L4 to L17 | 30d | 2014-12-08 | 2015-01-12 | SD-CS-L17-1102 SS+10d, SD-CS-L17-1102 FF+10d | 17d | 4d | Shop Drawings Submittals [60 h] |
|  | 4 | **Level 17 to Level 30 - Shop drawings** |  | 2015-02-05 | 2015-03-24 |  |  |  |  |
| SD-CS-L51-1122 |  | Preparation & Submittals of SD & BBS of Core Walls from L17 to L30 | 30d | 2015-02-05 | 2015-03-12 | SD-CS-L17-1102 SS+60d | 31d | 0d | Shop Drawings Submittals [60 h] |
| SD-CS-L51-1132 |  | Review & Approval of SD & BBS of Core Walls from L17 to L30 | 30d | 2015-02-18 | 2015-03-24 | SD-CS-L51-1122 SS+10d, SD-CS-L51-1122 FF+10d | 39d | 10d | Shop Drawings Approval [40 h] |
|  | 5 | **Level 30 to level 35 - Shop drawings** |  | 2015-04-18 | 2015-06-02 |  |  |  |  |
| SD-CS-L51-1142 |  | Preparation & Submittals of SD & BBS of Core Walls from L30 to L35 | 30d | 2015-04-18 | 2015-05-21 | SD-CS-L51-1122 SS+60d | 31d | 0d | Shop Drawings Submittals [60 h] |
| SD-CS-L51-1152 |  | Review & Approval of SD & BBS of Core Walls from L30 to L35 | 30d | 2015-04-29 | 2015-06-02 | SD-CS-L51-1142 SS+10d, SD-CS-L51-1142 FF+10d | 59d | 45d | Shop Drawings Approval [40 h] |
|  | 6 | **Level 35 to Level 45 - Shop drawings** |  | 2015-06-27 | 2015-08-13 |  |  |  |  |
| SD-CS-L51-1162 |  | Preparation & Submittals of SD & BBS of Core Walls from L35 to L45 | 30d | 2015-06-27 | 2015-08-02 | SD-CS-L51-1142 SS+60d | 31d | 0d | Shop Drawings Submittals [60 h] |
| SD-CS-L51-1172 |  | Review & Approval of SD & BBS of Core Walls from L35 to L45 | 30d | 2015-07-08 | 2015-08-13 | SD-CS-L51-1162 SS+10d, SD-CS-L51-1162 FF+10d | 31d | 20d | Shop Drawings Approval [40 h] |

| ID | WBS | Activity | Duration | Start | Finish | Predecessors | Total float | Free float | Resources |
| --- | --- | --- | --- | --- | --- | --- | --- | --- | --- |
|  | 7 | **Level 45 to Roof Level - Shop drawings** |  | 2015-09-07 | 2015-10-26 |  |  |  |  |
| SD-CS-L51-1182 |  | Preparation & Submittals of SD & BBS of Core Walls from L45 to L51 | 30d | 2015-09-07 | 2015-10-14 | SD-CS-L51-1162 SS+60d | 60d | 0d | Shop Drawings Submittals [60 h] |
| SD-CS-L51-1192 |  | Review & Approval of SD & BBS of Core Walls from L45 to L51 | 30d | 2015-09-19 | 2015-10-26 | SD-CS-L51-1182 SS+10d, SD-CS-L51-1182 FF+10d | 60d | 40d | Shop Drawings Approval [40 h] |
|  | 4 | **Columns & Walls Drawings** |  | 2014-10-11 | 2015-10-31 |  |  |  |  |
|  | 1 | **Raft to Ground - Shop drawings** |  | 2014-10-11 | 2014-11-25 |  |  |  |  |
| SD-CS-L0-1082 |  | Preparation & Submittals of SD & BBS of Columns & Walls from Raft level to B1 | 30d | 2014-10-11 | 2014-11-13 | PQ-CS-C-12 SS | 4d | 0d | Shop Drawings Submittals [60 h] |
| SD-CS-L0-1092 |  | Review & Approval of SD & BBS of Columns & Walls from Raft level to B1 | 30d | 2014-10-22 | 2014-11-25 | SD-CS-L0-1082 SS+10d, SD-CS-L0-1082 FF+10d | 27d | 12d | Shop Drawings Approval [40 h] |
|  | 2 | **Ground to Level 4 - Shop drawings** |  | 2014-10-27 | 2014-12-11 |  |  |  |  |
| SD-CS-L4-1102 |  | Preparation & Submittals of SD & BBS of Columns & Walls from B1 to L4 | 30d | 2014-10-27 | 2014-11-30 | SD-CS-L0-1082 SS+14d | 4d | 0d | Shop Drawings Submittals [60 h] |
| SD-CS-L4-1112 |  | Review & Approval of SD & BBS of Columns & Walls from B1 to L4 | 30d | 2014-11-08 | 2014-12-11 | SD-CS-L4-1102 SS+10d, SD-CS-L4-1102 FF+10d | 4d | 0d | Shop Drawings Approval [40 h] |
|  | 3 | **Level 4 to level 17 - Shop drawings** |  | 2014-12-01 | 2015-01-17 |  |  |  |  |
| SD-CS-L17-1122 |  | Preparation & Submittals of SD & BBS of Columns & Walls from L4 to L17 | 30d | 2014-12-01 | 2015-01-05 | SD-CS-L4-1102 SS+30d | 13d | 0d | Shop Drawings Submittals [60 h] |
| SD-CS-L17-1132 |  | Review & Approval of SD & BBS of Columns & Walls from L4 to L17 | 30d | 2014-12-13 | 2015-01-17 | SD-CS-L17-1122 SS+10d, SD-CS-L17-1122 FF+10d | 13d | 0d | Shop Drawings Approval [40 h] |
|  | 4 | **Level 17 to Level 30 - Shop drawings** |  | 2015-02-11 | 2015-03-29 |  |  |  |  |
| SD-CS-L51-1202 |  | Preparation & Submittals of SD & BBS of Columns & Walls from L17 to L30 | 30d | 2015-02-11 | 2015-03-17 | SD-CS-L17-1122 SS+60d | 27d | 0d | Shop Drawings Submittals [60 h] |
| SD-CS-L51-1212 |  | Review & Approval of SD & BBS of Columns & Walls from L17 to L30 | 30d | 2015-02-23 | 2015-03-29 | SD-CS-L51-1202 SS+10d, SD-CS-L51-1202 FF+10d | 35d | 6d | Shop Drawings Approval [40 h] |
|  | 5 | **Level 30 to level 35 - Shop drawings** |  | 2015-04-22 | 2015-06-07 |  |  |  |  |
| SD-CS-L51-1222 |  | Preparation & Submittals of SD & BBS of Columns & Walls from L30 to L35 | 30d | 2015-04-22 | 2015-05-26 | SD-CS-L51-1202 SS+60d | 27d | 0d | Shop Drawings Submittals [60 h] |
| SD-CS-L51-1232 |  | Review & Approval of SD & BBS of Columns & Walls from L30 to L35 | 30d | 2015-05-04 | 2015-06-07 | SD-CS-L51-1222 SS+10d, SD-CS-L51-1222 FF+10d | 55d | 41d | Shop Drawings Approval [40 h] |
|  | 6 | **Level 35 to Level 45 - Shop drawings** |  | 2015-07-01 | 2015-08-18 |  |  |  |  |
| SD-CS-L51-1242 |  | Preparation & Submittals of SD & BBS of Columns & Walls from L35 to L45 | 30d | 2015-07-01 | 2015-08-06 | SD-CS-L51-1222 SS+60d | 27d | 0d | Shop Drawings Submittals [60 h] |
| SD-CS-L51-1252 |  | Review & Approval of SD & BBS of Columns & Walls from L35 to L45 | 30d | 2015-07-13 | 2015-08-18 | SD-CS-L51-1242 SS+10d, SD-CS-L51-1242 FF+10d | 27d | 16d | Shop Drawings Approval [40 h] |
|  | 7 | **Level 45 to Roof Level - Shop drawings** |  | 2015-09-12 | 2015-10-31 |  |  |  |  |
| SD-CS-L51-1262 |  | Preparation & Submittals of SD & BBS of Columns & Walls from L45 to L51 | 30d | 2015-09-12 | 2015-10-19 | SD-CS-L51-1242 SS+60d | 56d | 0d | Shop Drawings Submittals [60 h] |
| SD-CS-L51-1272 |  | Review & Approval of SD & BBS of Columns & Walls from L45 to L51 | 30d | 2015-09-27 | 2015-10-31 | SD-CS-L51-1262 SS+10d, SD-CS-L51-1262 FF+10d | 56d | 36d | Shop Drawings Approval [40 h] |

| ID | WBS | Activity | Duration | Start | Finish | Predecessors | Total float | Free float | Resources |
| --- | --- | --- | --- | --- | --- | --- | --- | --- | --- |
|  | 5 | **Facade** |  | 2014-12-09 | 2015-11-08 |  |  |  |  |
|  | 1 | **North Elevation** |  | 2014-12-09 | 2015-10-04 |  |  |  |  |
|  | 1 | **Ground to 4th Floor** |  | 2014-12-09 | 2015-01-25 |  |  |  |  |
| SD-CS-L0-1282 |  | Preparation & Submittals of Facade SD - North Elevation | 30d | 2014-12-09 | 2015-01-13 | PQ-CS-C-752 | 5d | 0d | Shop Drawings Submittals [60 h] |
| SD-CS-L0-1292 |  | Review & Approval Facade SD - North Elevation | 30d | 2014-12-22 | 2015-01-25 | SD-CS-L0-1282 SS+10d, SD-CS-L0-1282 FF+10d | 5d | 0d | Shop Drawings Approval [40 h] |
|  | 2 | **5th Floor to 10th Floor** |  | 2015-01-14 | 2015-03-02 |  |  |  |  |
| SD-CS-L0-1302 |  | Preparation & Submittals of of Facade SD - North Elevation | 30d | 2015-01-14 | 2015-02-18 | SD-CS-L0-1282 | 17d | 0d | Shop Drawings Submittals [60 h] |
| SD-CS-L0-1312 |  | Review & Approval Facade SD - North Elevation | 30d | 2015-01-26 | 2015-03-02 | SD-CS-L0-1302 SS+10d, SD-CS-L0-1302 FF+10d | 17d | 16d | Shop Drawings Approval [40 h] |
|  | 3 | **11th Floor to 16th Floor** |  | 2015-02-19 | 2015-04-06 |  |  |  |  |
| SD-CS-L0-1322 |  | Preparation & Submittals of Facade SD - North Elevation | 30d | 2015-02-19 | 2015-03-25 | SD-CS-L0-1302 | 29d | 0d | Shop Drawings Submittals [60 h] |
| SD-CS-L0-1332 |  | Review & Approval Facade SD - North Elevation | 30d | 2015-03-03 | 2015-04-06 | SD-CS-L0-1322 SS+10d, SD-CS-L0-1322 FF+10d | 29d | 28d | Shop Drawings Approval [40 h] |
|  | 4 | **17th Floor to 22nd Floor** |  | 2015-03-26 | 2015-05-11 |  |  |  |  |
| SD-CS-L0-1342 |  | Preparation & Submittals of Facade SD - North Elevation | 30d | 2015-03-26 | 2015-04-29 | SD-CS-L0-1322 | 36d | 0d | Shop Drawings Submittals [60 h] |
| SD-CS-L0-1352 |  | Review & Approval Facade SD - North Elevation | 30d | 2015-04-07 | 2015-05-11 | SD-CS-L0-1342 SS+10d, SD-CS-L0-1342 FF+10d | 41d | 40d | Shop Drawings Approval [40 h] |
|  | 5 | **23rd Floor to 29th Floor** |  | 2015-04-30 | 2015-06-15 |  |  |  |  |
| SD-CS-L0-1362 |  | Preparation & Submittals of Facade SD - North Elevation | 30d | 2015-04-30 | 2015-06-03 | SD-CS-L0-1342 | 36d | 0d | Shop Drawings Submittals [60 h] |
| SD-CS-L0-1372 |  | Review & Approval Facade SD - North Elevation | 30d | 2015-05-12 | 2015-06-15 | SD-CS-L0-1362 SS+10d, SD-CS-L0-1362 FF+10d | 54d |  | Shop Drawings Approval [40 h] |
|  | 6 | **30th Floor ro 36th Floor** |  | 2015-06-04 | 2015-07-22 |  |  |  |  |
| SD-CS-L0-1382 |  | Preparation & Submittals of Facade SD - North Elevation | 30d | 2015-06-04 | 2015-07-08 | SD-CS-L0-1362 | 36d | 0d | Shop Drawings Submittals [60 h] |
| SD-CS-L0-1392 |  | Review & Approval Facade SD - North Elevation | 30d | 2015-06-16 | 2015-07-22 | SD-CS-L0-1382 SS+10d, SD-CS-L0-1382 FF+10d | 66d |  | Shop Drawings Approval [40 h] |
|  | 7 | **37th Floor to 43rd Floor** |  | 2015-07-09 | 2015-08-26 |  |  |  |  |
| SD-CS-L0-1402 |  | Preparation & Submittals of Facade SD - North Elevation | 30d | 2015-07-09 | 2015-08-15 | SD-CS-L0-1382 | 51d | 0d | Shop Drawings Submittals [60 h] |
| SD-CS-L0-1412 |  | Review & Approval Facade SD - North Elevation | 30d | 2015-07-23 | 2015-08-26 | SD-CS-L0-1402 SS+10d, SD-CS-L0-1402 FF+10d | 81d |  | Shop Drawings Approval [40 h] |
|  | 8 | **44th Floor to Upper roof level** |  | 2015-08-16 | 2015-10-04 |  |  |  |  |
| SD-CS-L0-1422 |  | Preparation & Submittals of Facade SD - North Elevation | 30d | 2015-08-16 | 2015-09-19 | SD-CS-L0-1402 | 63d | 0d | Shop Drawings Submittals [60 h] |
| SD-CS-L0-1432 |  | Review & Approval Facade SD - North Elevation | 30d | 2015-08-27 | 2015-10-04 | SD-CS-L0-1422 SS+10d, SD-CS-L0-1422 FF+10d | 93d |  | Shop Drawings Approval [40 h] |

| ID | WBS | Activity | Duration | Start | Finish | Predecessors | Total float | Free float | Resources |
| --- | --- | --- | --- | --- | --- | --- | --- | --- | --- |
|  | 2 | **South Elevation** |  | 2014-12-09 | 2015-10-04 |  |  |  |  |
|  | 1 | **Ground to 4th Floor** |  | 2014-12-09 | 2015-01-25 |  |  |  |  |
| SD-CS-L0-1442 |  | Preparation & Submittals of Facade SD - South Elevation | 30d | 2014-12-09 | 2015-01-13 | PQ-CS-C-752 | 5d | 0d | Shop Drawings Submittals [60 h] |
| SD-CS-L0-1452 |  | Review & Approval Facade SD - South Elevation | 30d | 2014-12-22 | 2015-01-25 | SD-CS-L0-1442 SS+10d, SD-CS-L0-1442 FF+10d | 5d | 2d | Shop Drawings Approval [40 h] |
|  | 2 | **5th Floor to 10th Floor** |  | 2015-01-14 | 2015-03-02 |  |  |  |  |
| SD-CS-L0-1462 |  | Preparation & Submittals of Facade SD - South Elevation | 30d | 2015-01-14 | 2015-02-18 | SD-CS-L0-1442 | 17d | 0d | Shop Drawings Submittals [60 h] |
| SD-CS-L0-1472 |  | Review & Approval Facade SD - South Elevation | 30d | 2015-01-26 | 2015-03-02 | SD-CS-L0-1462 SS+10d, SD-CS-L0-1462 FF+10d | 17d | 16d | Shop Drawings Approval [40 h] |
|  | 3 | **11th Floor to 16th Floor** |  | 2015-02-19 | 2015-04-06 |  |  |  |  |
| SD-CS-L0-1482 |  | Preparation & Submittals of Facade SD - South Elevation | 30d | 2015-02-19 | 2015-03-25 | SD-CS-L0-1462 | 29d | 0d | Shop Drawings Submittals [60 h] |
| SD-CS-L0-1492 |  | Review & Approval Facade SD - South Elevation | 30d | 2015-03-03 | 2015-04-06 | SD-CS-L0-1482 SS+10d, SD-CS-L0-1482 FF+10d | 29d | 28d | Shop Drawings Approval [40 h] |
|  | 4 | **17th Floor to 22nd Floor** |  | 2015-03-26 | 2015-05-11 |  |  |  |  |
| SD-CS-L0-1502 |  | Preparation & Submittals of Facade SD - South Elevation | 30d | 2015-03-26 | 2015-04-29 | SD-CS-L0-1482 | 41d | 0d | Shop Drawings Submittals [60 h] |
| SD-CS-L0-1512 |  | Review & Approval Facade SD - South Elevation | 30d | 2015-04-07 | 2015-05-11 | SD-CS-L0-1502 SS+10d, SD-CS-L0-1502 FF+10d, SD-CS-L0-1462 | 41d | 40d | Shop Drawings Approval [40 h] |
|  | 5 | **23rd Floor to 29th Floor** |  | 2015-04-30 | 2015-06-15 |  |  |  |  |
| SD-CS-L0-1522 |  | Preparation & Submittals of Facade SD - South Elevation | 30d | 2015-04-30 | 2015-06-03 | SD-CS-L0-1502 | 54d | 0d | Shop Drawings Submittals [60 h] |
| SD-CS-L0-1532 |  | Review & Approval Facade SD - South Elevation | 30d | 2015-05-12 | 2015-06-15 | SD-CS-L0-1522 SS+10d, SD-CS-L0-1522 FF+10d | 54d |  | Shop Drawings Approval [40 h] |
|  | 6 | **30th Floor ro 36th Floor** |  | 2015-06-04 | 2015-07-22 |  |  |  |  |
| SD-CS-L0-1542 |  | Preparation & Submittals of Facade SD - South Elevation | 30d | 2015-06-04 | 2015-07-08 | SD-CS-L0-1522 | 66d | 0d | Shop Drawings Submittals [60 h] |
| SD-CS-L0-1552 |  | Review & Approval Facade SD - South Elevation | 30d | 2015-06-16 | 2015-07-22 | SD-CS-L0-1542 SS+10d, SD-CS-L0-1542 FF+10d | 66d |  | Shop Drawings Approval [40 h] |
|  | 7 | **37th Floor to 43rd Floor** |  | 2015-07-09 | 2015-08-26 |  |  |  |  |
| SD-CS-L0-1562 |  | Preparation & Submittals of Facade SD - South Elevation | 30d | 2015-07-09 | 2015-08-15 | SD-CS-L0-1542 | 81d | 0d | Shop Drawings Submittals [60 h] |
| SD-CS-L0-1572 |  | Review & Approval Facade SD - South Elevation | 30d | 2015-07-23 | 2015-08-26 | SD-CS-L0-1562 SS+10d, SD-CS-L0-1562 FF+10d | 81d |  | Shop Drawings Approval [40 h] |
|  | 8 | **44th Floor to Upper roof level** |  | 2015-08-16 | 2015-10-04 |  |  |  |  |
| SD-CS-L0-1582 |  | Preparation & Submittals of Facade SD - South Elevation | 30d | 2015-08-16 | 2015-09-19 | SD-CS-L0-1562 | 93d | 0d | Shop Drawings Submittals [60 h] |
| SD-CS-L0-1592 |  | Review & Approval Facade SD - South Elevation | 30d | 2015-08-27 | 2015-10-04 | SD-CS-L0-1582 SS+10d, SD-CS-L0-1582 FF+10d | 93d |  | Shop Drawings Approval [40 h] |

| ID | WBS | Activity | Duration | Start | Finish | Predecessors | Total float | Free float | Resources |
| --- | --- | --- | --- | --- | --- | --- | --- | --- | --- |
|  | 3 | **East Elevation** |  | 2014-12-09 | 2015-11-08 |  |  |  |  |
|  | 1 | **Ground to 4th Floor** |  | 2014-12-09 | 2015-01-25 |  |  |  |  |
| SD-CS-L0-1602 |  | Preparation & Submittals of Facade SD - East Elevation | 30d | 2014-12-09 | 2015-01-13 | PQ-CS-C-752 | 5d | 0d | Shop Drawings Submittals [60 h] |
| SD-CS-L0-1612 |  | Review & Approval Facade SD - East Elevation | 30d | 2014-12-22 | 2015-01-25 | SD-CS-L0-1602 SS+10d, SD-CS-L0-1602 FF+10d | 5d | 2d | Shop Drawings Approval [40 h] |
|  | 2 | **5th Floor to 10th Floor** |  | 2015-01-14 | 2015-03-02 |  |  |  |  |
| SD-CS-L0-1622 |  | Preparation & Submittals of Facade SD - East Elevation | 30d | 2015-01-14 | 2015-02-18 | SD-CS-L0-1602 | 17d | 0d | Shop Drawings Submittals [60 h] |
| SD-CS-L0-1632 |  | Review & Approval Facade SD - East Elevation | 30d | 2015-01-26 | 2015-03-02 | SD-CS-L0-1622 SS+10d, SD-CS-L0-1622 FF+10d | 17d | 16d | Shop Drawings Approval [40 h] |
|  | 3 | **11th Floor to 16th Floor** |  | 2015-02-19 | 2015-04-06 |  |  |  |  |
| SD-CS-L0-1642 |  | Preparation & Submittals of Facade SD - East Elevation | 30d | 2015-02-19 | 2015-03-25 | SD-CS-L0-1622 | 29d | 0d | Shop Drawings Submittals [60 h] |
| SD-CS-L0-1652 |  | Review & Approval Facade SD - East Elevation | 30d | 2015-03-03 | 2015-04-06 | SD-CS-L0-1642 SS+10d, SD-CS-L0-1642 FF+10d | 29d | 28d | Shop Drawings Approval [40 h] |
|  | 4 | **17th Floor to 22nd Floor** |  | 2015-03-26 | 2015-05-11 |  |  |  |  |
| SD-CS-L0-1662 |  | Preparation & Submittals of Facade SD - East Elevation | 30d | 2015-03-26 | 2015-04-29 | SD-CS-L0-1642 | 41d | 0d | Shop Drawings Submittals [60 h] |
| SD-CS-L0-1672 |  | Review & Approval Facade SD - East Elevation | 30d | 2015-04-07 | 2015-05-11 | SD-CS-L0-1662 SS+10d, SD-CS-L0-1662 FF+10d | 41d | 40d | Shop Drawings Approval [40 h] |
|  | 5 | **23rd Floor to 29th Floor** |  | 2015-04-30 | 2015-06-15 |  |  |  |  |
| SD-CS-L0-1682 |  | Preparation & Submittals of Facade SD - East Elevation | 30d | 2015-04-30 | 2015-06-03 | SD-CS-L0-1662 | 54d | 0d | Shop Drawings Submittals [60 h] |
| SD-CS-L0-1692 |  | Review & Approval Facade SD - East Elevation | 30d | 2015-05-12 | 2015-06-15 | SD-CS-L0-1682 SS+10d, SD-CS-L0-1682 FF+10d | 54d |  | Shop Drawings Approval [40 h] |
|  | 6 | **30th Floor ro 36th Floor** |  | 2015-07-09 | 2015-08-26 |  |  |  |  |
| SD-CS-L0-1702 |  | Preparation & Submittals of Facade SD - East Elevation | 30d | 2015-07-09 | 2015-08-15 | SD-CS-L0-1682, SD-CS-L0-1382 | 36d | 0d | Shop Drawings Submittals [60 h] |
| SD-CS-L0-1712 |  | Review & Approval Facade SD - East Elevation | 30d | 2015-07-23 | 2015-08-26 | SD-CS-L0-1702 SS+10d, SD-CS-L0-1702 FF+10d | 36d |  | Shop Drawings Approval [40 h] |
|  | 7 | **37th Floor to 43rd Floor** |  | 2015-08-16 | 2015-10-04 |  |  |  |  |
| SD-CS-L0-1722 |  | Preparation & Submittals of Facade SD - East Elevation | 30d | 2015-08-16 | 2015-09-19 | SD-CS-L0-1702, SD-CS-L0-1402 | 51d | 0d | Shop Drawings Submittals [60 h] |
| SD-CS-L0-1732 |  | Review & Approval Facade SD - East Elevation | 30d | 2015-08-27 | 2015-10-04 | SD-CS-L0-1722 SS+10d, SD-CS-L0-1722 FF+10d | 51d |  | Shop Drawings Approval [40 h] |
|  | 8 | **44th Floor to Upper roof level** |  | 2015-09-23 | 2015-11-08 |  |  |  |  |
| SD-CS-L0-1742 |  | Preparation & Submittals of Facade SD - East Elevation | 30d | 2015-09-23 | 2015-10-27 | SD-CS-L0-1722, SD-CS-L0-1422 | 63d | 0d | Shop Drawings Submittals [60 h] |
| SD-CS-L0-1752 |  | Review & Approval Facade SD - East Elevation | 30d | 2015-10-05 | 2015-11-08 | SD-CS-L0-1742 SS+10d, SD-CS-L0-1742 FF+10d | 63d |  | Shop Drawings Approval [40 h] |

| ID | WBS | Activity | Duration | Start | Finish | Predecessors | Total float | Free float | Resources |
| --- | --- | --- | --- | --- | --- | --- | --- | --- | --- |
|  | 4 | **West Elevation** |  | 2014-12-09 | 2015-10-04 |  |  |  |  |
|  | 1 | **Ground to 4th Floor** |  | 2014-12-09 | 2015-01-25 |  |  |  |  |
| SD-CS-L0-1762 |  | Preparation & Submittals of Facade SD - West Elevation | 30d | 2014-12-09 | 2015-01-13 | PQ-CS-C-752 | 5d | 0d | Shop Drawings Submittals [60 h] |
| SD-CS-L0-1772 |  | Review & Approval Facade SD - West Elevation | 30d | 2014-12-22 | 2015-01-25 | SD-CS-L0-1762 SS+10d, SD-CS-L0-1762 FF+10d | 5d | 2d | Shop Drawings Approval [40 h] |
|  | 2 | **5th Floor to 10th Floor** |  | 2015-01-14 | 2015-03-02 |  |  |  |  |
| SD-CS-L0-1782 |  | Preparation & Submittals of Facade SD - West Elevation | 30d | 2015-01-14 | 2015-02-18 | SD-CS-L0-1762 | 17d | 0d | Shop Drawings Submittals [60 h] |
| SD-CS-L0-1792 |  | Review & Approval Facade SD - West Elevation | 30d | 2015-01-26 | 2015-03-02 | SD-CS-L0-1782 SS+10d, SD-CS-L0-1782 FF+10d | 17d | 16d | Shop Drawings Approval [40 h] |
|  | 3 | **11th Floor to 16th Floor** |  | 2015-02-19 | 2015-04-06 |  |  |  |  |
| SD-CS-L0-1802 |  | Preparation & Submittals of Facade SD - West Elevation | 30d | 2015-02-19 | 2015-03-25 | SD-CS-L0-1782 | 29d | 0d | Shop Drawings Submittals [60 h] |
| SD-CS-L0-1812 |  | Review & Approval Facade SD - West Elevation | 30d | 2015-03-03 | 2015-04-06 | SD-CS-L0-1802 SS+10d, SD-CS-L0-1802 FF+10d | 29d | 28d | Shop Drawings Approval [40 h] |
|  | 4 | **17th Floor to 22nd Floor** |  | 2015-03-26 | 2015-05-11 |  |  |  |  |
| SD-CS-L0-1822 |  | Preparation & Submittals of Facade SD - West Elevation | 30d | 2015-03-26 | 2015-04-29 | SD-CS-L0-1802 | 41d | 0d | Shop Drawings Submittals [60 h] |
| SD-CS-L0-1832 |  | Review & Approval Facade SD - West Elevation | 30d | 2015-04-07 | 2015-05-11 | SD-CS-L0-1822 SS+10d, SD-CS-L0-1822 FF+10d | 41d | 40d | Shop Drawings Approval [40 h] |
|  | 5 | **23rd Floor to 29th Floor** |  | 2015-04-30 | 2015-06-15 |  |  |  |  |
| SD-CS-L0-1842 |  | Preparation & Submittals of Facade SD - West Elevation | 30d | 2015-04-30 | 2015-06-03 | SD-CS-L0-1822 | 54d | 0d | Shop Drawings Submittals [60 h] |
| SD-CS-L0-1852 |  | Review & Approval Facade SD - West Elevation | 30d | 2015-05-12 | 2015-06-15 | SD-CS-L0-1842 SS+10d, SD-CS-L0-1842 FF+10d | 54d |  | Shop Drawings Approval [40 h] |
|  | 6 | **30th Floor ro 36th Floor** |  | 2015-06-04 | 2015-07-22 |  |  |  |  |
| SD-CS-L0-1862 |  | Preparation & Submittals of Facade SD - West Elevation | 30d | 2015-06-04 | 2015-07-08 | SD-CS-L0-1842 | 66d | 0d | Shop Drawings Submittals [60 h] |
| SD-CS-L0-1872 |  | Review & Approval Facade SD - West Elevation | 30d | 2015-06-16 | 2015-07-22 | SD-CS-L0-1862 SS+10d, SD-CS-L0-1862 FF+10d | 66d |  | Shop Drawings Approval [40 h] |
|  | 7 | **37th Floor to 43rd Floor** |  | 2015-07-09 | 2015-08-26 |  |  |  |  |
| SD-CS-L0-1882 |  | Preparation & Submittals of Facade SD - West Elevation | 30d | 2015-07-09 | 2015-08-15 | SD-CS-L0-1862 | 81d | 0d | Shop Drawings Submittals [60 h] |
| SD-CS-L0-1892 |  | Review & Approval Facade SD - West Elevation | 30d | 2015-07-23 | 2015-08-26 | SD-CS-L0-1882 SS+10d, SD-CS-L0-1882 FF+10d | 81d |  | Shop Drawings Approval [40 h] |
|  | 8 | **44th Floor to Upper roof level** |  | 2015-08-16 | 2015-10-04 |  |  |  |  |
| SD-CS-L0-1902 |  | Preparation & Submittals of Facade SD - West Elevation | 30d | 2015-08-16 | 2015-09-19 | SD-CS-L0-1882 | 93d | 0d | Shop Drawings Submittals [60 h] |
| SD-CS-L0-1912 |  | Review & Approval Facade SD - West Elevation | 30d | 2015-08-27 | 2015-10-04 | SD-CS-L0-1902 SS+10d, SD-CS-L0-1902 FF+10d | 93d |  | Shop Drawings Approval [40 h] |

| ID | WBS | Activity | Duration | Start | Finish | Predecessors | Total float | Free float | Resources | Cost |
| --- | --- | --- | --- | --- | --- | --- | --- | --- | --- | --- |
|  | 4 | **Structural Steel** |  | 2014-10-26 | 2015-05-24 |  |  |  |  |  |
|  | 6 | **Floor Decking from Grounbd floor to third floor** |  | 2014-10-26 | 2014-12-10 |  |  |  |  |  |
| SD-CS-L0-1242 |  | Preparation & Submittals of SD for structural steel of FLoor Decking - first to third floor | 30d | 2014-10-26 | 2014-11-29 | PQ-CS-C-92 SS+7d | 1d | 0d | Shop Drawings Submittals [60 h] | 42,646.62 |
| SD-CS-L0-1252 |  | Review & Approval of SD for structural steel of FLoor Decking - first to third floor | 30d | 2014-11-06 | 2014-12-10 | SD-CS-L0-1242 SS+10d, SD-CS-L0-1242 FF+10d | 1d | 0d | Shop Drawings Approval [40 h] | 42,646.62 |
|  | 2 | **Main Canopy - Facade Canopy** |  | 2014-11-03 | 2014-12-20 |  |  |  |  |  |
| SD-CS-L0-1142 |  | Preparation & Submittals of SD for structural steel main canopy | 30d | 2014-11-03 | 2014-12-07 | PQ-CS-C-92 | 94d | 0d | Shop Drawings Submittals [60 h] | 42,646.62 |
| SD-CS-L0-1152 |  | Review & Approval of SD for structural steel main canopy | 30d | 2014-11-15 | 2014-12-20 | SD-CS-L0-1142 SS+10d, SD-CS-L0-1142 FF+10d | 94d | 0d | Shop Drawings Approval [40 h] | 42,646.62 |
|  | 1 | **Entrance Canopy** |  | 2014-11-03 | 2014-12-20 |  |  |  |  |  |
| SD-CS-L0-1162 |  | Preparation & Submittals of SD for structural steel Entrance canopy | 30d | 2014-11-03 | 2014-12-07 | PQ-CS-C-92 | 14d | 0d | Shop Drawings Submittals [60 h] | 42,646.62 |
| SD-CS-L0-1172 |  | Review & Approval of SD for structural steel Entrance canopy | 30d | 2014-11-15 | 2014-12-20 | SD-CS-L0-1162 SS+10d, SD-CS-L0-1162 FF+10d | 44d | 0d | Shop Drawings Approval [40 h] | 42,646.62 |
|  | 3 | **Main Lobby - Truss Framing** |  | 2014-11-17 | 2015-01-03 |  |  |  |  |  |
| SD-CS-L0-1182 |  | Preparation & Submittals of SD for structural steel of Main Lobby - Truss framing | 30d | 2014-11-17 | 2014-12-22 | PQ-CS-C-92, SD-CS-L0-1162 SS+12d | 14d | 0d | Shop Drawings Submittals [60 h] | 42,646.62 |
| SD-CS-L0-1192 |  | Review & Approval of SD for structural steel of Main Lobby - Truss framing | 30d | 2014-11-29 | 2015-01-03 | SD-CS-L0-1182 SS+10d, SD-CS-L0-1182 FF+10d | 14d | 0d | Shop Drawings Approval [40 h] | 42,646.62 |
|  | 8 | **Structural Steel Columns** |  | 2014-12-23 | 2015-02-07 |  |  |  |  |  |
| SD-CS-L0-1122 |  | Preparation & Submittals of SD for structural steel Columns at level 33 | 30d | 2014-12-23 | 2015-01-26 | PQ-CS-C-92, SD-CS-L0-1182 | 102d | 0d | Shop Drawings Submittals [60 h] | 42,646.62 |
| SD-CS-L0-1132 |  | Review & Approval SD for structural steel Columns at level 33 | 30d | 2015-01-04 | 2015-02-07 | SD-CS-L0-1122 SS+10d, SD-CS-L0-1122 FF+10d | 150d | 28d | Shop Drawings Approval [40 h] | 42,646.62 |
|  | 5 | **Swimming Pool Decking** |  | 2015-01-27 | 2015-03-15 |  |  |  |  |  |
| SD-CS-L0-1222 |  | Preparation & Submittals of SD for structural steel of swimming Pool Decking | 30d | 2015-01-27 | 2015-03-03 | PQ-CS-C-92, SD-CS-L0-1122 | 102d | 0d | Shop Drawings Submittals [60 h] | 42,646.62 |
| SD-CS-L0-1232 |  | Review & Approval of SD for structural steel of swimming Pool Decking | 30d | 2015-02-08 | 2015-03-15 | SD-CS-L0-1222 SS+10d, SD-CS-L0-1222 FF+10d | 102d | 12d | Shop Drawings Approval [40 h] | 42,646.62 |
|  | 7 | **Pergola Support** |  | 2015-03-04 | 2015-04-19 |  |  |  |  |  |
| SD-CS-L0-1262 |  | Preparation & Submittals of SD for structural steel of Pergola support at 35th Floor | 30d | 2015-03-04 | 2015-04-07 | PQ-CS-C-92, SD-CS-L0-1222 | 190d | 0d | Shop Drawings Submittals [60 h] | 42,646.62 |
| SD-CS-L0-1272 |  | Review & Approval of SD for structural steel of Pergola support at 35th Floor | 30d | 2015-03-16 | 2015-04-19 | SD-CS-L0-1262 SS+10d, SD-CS-L0-1262 FF+10d | 190d | 0d | Shop Drawings Approval [40 h] | 42,646.62 |
|  | 4 | **Roof Crown Support** |  | 2015-04-08 | 2015-05-24 |  |  |  |  |  |
| SD-CS-L0-1202 |  | Preparation & Submittals of SD for structural steel of Roof Crown Support | 30d | 2015-04-08 | 2015-05-12 | PQ-CS-C-92, SD-CS-L0-1262 | 206d | 0d | Shop Drawings Submittals [60 h] | 42,646.62 |
| SD-CS-L0-1212 |  | Review & Approval of SD for structural steel of Roof Crown Support | 30d | 2015-04-20 | 2015-05-24 | SD-CS-L0-1202 SS+10d, SD-CS-L0-1202 FF+10d | 206d | 0d | Shop Drawings Approval [40 h] | 42,646.62 |

Notes:
- SD-CS-L0-1242: Expenses: SD 42646.6
- SD-CS-L0-1252: Expenses: SD 42646.6
- SD-CS-L0-1142: Expenses: SD 42646.6
- SD-CS-L0-1152: Expenses: SD 42646.6
- SD-CS-L0-1162: Expenses: SD 42646.6
- SD-CS-L0-1172: Expenses: SD 42646.6
- SD-CS-L0-1182: Expenses: SD 42646.6
- SD-CS-L0-1192: Expenses: SD 42646.6
- SD-CS-L0-1122: Expenses: SD 42646.6
- SD-CS-L0-1132: Expenses: SD 42646.6
- SD-CS-L0-1222: Expenses: SD 42646.6
- SD-CS-L0-1232: Expenses: SD 42646.6
- SD-CS-L0-1262: Expenses: SD 42646.6
- SD-CS-L0-1272: Expenses: SD 42646.6
- SD-CS-L0-1202: Expenses: SD 42646.6
- SD-CS-L0-1212: Expenses: SD 42646.6

| ID | WBS | Activity | Duration | Start | Finish | Predecessors | Total float | Free float | Resources |
| --- | --- | --- | --- | --- | --- | --- | --- | --- | --- |
|  | 3 | **Architectural / FInishes** |  | 2014-10-20 | 2016-08-28 |  |  |  |  |
|  | 1 | **Block Works** |  | 2014-12-01 | 2016-03-16 |  |  |  |  |
|  | R | **Basement 3 Floor level - Shop drawings** |  | 2014-12-01 | 2015-01-17 |  |  |  |  |
| SD-CS-B3-322 |  | Preparation & Submittals of SD of Block Works at B3 | 30d | 2014-12-01 | 2015-01-05 | PQ-CS-C-72 | 17d | 0d | Shop Drawings Submittals [60 h] |
| SD-CS-B3-332 |  | Review & Approval of SD of Block Works at B3 | 30d | 2014-12-13 | 2015-01-17 | SD-CS-B3-322 SS+10d, SD-CS-B3-322 FF+10d | 109d | 53d | Shop Drawings Approval [40 h] |
|  | 1 | **Basement 2 Floor level - Shop drawings** |  | 2014-12-09 | 2015-01-25 |  |  |  |  |
| SD-CS-B3-302 |  | Preparation & Submittals of SD of Block Works at B2 | 30d | 2014-12-09 | 2015-01-13 | SD-CS-B3-322 SS+7d | 17d | 0d | Shop Drawings Submittals [60 h] |
| SD-CS-B3-312 |  | Review & Approval of SD of Block Works at B2 | 30d | 2014-12-22 | 2015-01-25 | SD-CS-B3-302 SS+10d, SD-CS-B3-302 FF+10d | 269d | 258d | Shop Drawings Approval [40 h] |
|  | 2 | **Basement 1 Floor level - Shop drawings** |  | 2014-12-17 | 2015-02-02 |  |  |  |  |
| SD-CS-B2-242 |  | Preparation & Submittals of SD of Block Works at B1 | 30d | 2014-12-17 | 2015-01-21 | SD-CS-B3-302 SS+7d | 17d | 0d | Shop Drawings Submittals [60 h] |
| SD-CS-B2-252 |  | Review & Approval of SD of Block Works at B1 | 30d | 2014-12-30 | 2015-02-02 | SD-CS-B2-242 SS+10d, SD-CS-B2-242 FF+10d | 288d | 265d | Shop Drawings Approval [40 h] |
|  | 3 | **Ground Floor level - Shop drawings** |  | 2014-12-27 | 2015-02-11 |  |  |  |  |
| SD-CS-B1-242 |  | Preparation & Submittals of SD of Block Works at GF | 30d | 2014-12-27 | 2015-01-29 | SD-CS-B2-242 SS+7d, G-CD-003 | 17d | 0d | Shop Drawings Submittals [60 h] |
| SD-CS-B1-252 |  | Review & Approval of SD of Block Works at GF | 30d | 2015-01-07 | 2015-02-11 | SD-CS-B1-242 SS+10d, SD-CS-B1-242 FF+10d | 73d | 11d | Shop Drawings Approval [40 h] |
|  | 4 | **Mezzanine Floor level - Shop drawings** |  | 2015-01-04 | 2015-02-19 |  |  |  |  |
| SD-CS-GF-242 |  | Preparation & Submittals of SD of Block Works at ML | 30d | 2015-01-04 | 2015-02-07 | SD-CS-B1-242 SS+7d | 17d | 0d | Shop Drawings Submittals [60 h] |
| SD-CS-GF-252 |  | Review & Approval of SD of Block Works at ML | 30d | 2015-01-15 | 2015-02-19 | SD-CS-GF-242 SS+10d, SD-CS-GF-242 FF+10d | 86d | 11d | Shop Drawings Approval [40 h] |
|  | 5 | **Level 1 Floor - Shop drawings** |  | 2015-01-12 | 2015-02-28 |  |  |  |  |
| SD-CS-L1-262 |  | Preparation & Submittals of SD of Block Works at L1 | 30d | 2015-01-12 | 2015-02-16 | SD-CS-GF-242 SS+7d | 17d | 0d | Shop Drawings Submittals [60 h] |
| SD-CS-L1-272 |  | Review & Approval of SD of Block Works at L1 | 30d | 2015-01-24 | 2015-02-28 | SD-CS-L1-262 SS+10d, SD-CS-L1-262 FF+10d | 99d | 11d | Shop Drawings Approval [40 h] |
|  | 6 | **Level 2 Floor - Shop drawings** |  | 2015-01-20 | 2015-03-08 |  |  |  |  |
| SD-CS-L2-282 |  | Preparation & Submittals of SD of Block Works at L2 | 30d | 2015-01-20 | 2015-02-24 | SD-CS-L1-262 SS+7d | 17d | 0d | Shop Drawings Submittals [60 h] |
| SD-CS-L2-292 |  | Review & Approval of SD of Block Works at L2 | 30d | 2015-02-01 | 2015-03-08 | SD-CS-L2-282 SS+10d, SD-CS-L2-282 FF+10d | 97d | 18d | Shop Drawings Approval [40 h] |
|  | 7 | **Level 3 Floor - Shop drawings** |  | 2015-01-28 | 2015-03-16 |  |  |  |  |
| SD-CS-L3-302 |  | Preparation & Submittals of SD of Block Works at L3 | 30d | 2015-01-28 | 2015-03-04 | SD-CS-L2-282 SS+7d | 17d | 0d | Shop Drawings Submittals [60 h] |
| SD-CS-L3-312 |  | Review & Approval of SD of Block Works at L3 | 30d | 2015-02-09 | 2015-03-16 | SD-CS-L3-302 SS+10d, SD-CS-L3-302 FF+10d | 90d | 18d | Shop Drawings Approval [40 h] |

| ID | WBS | Activity | Duration | Start | Finish | Predecessors | Total float | Free float | Resources |
| --- | --- | --- | --- | --- | --- | --- | --- | --- | --- |
|  | 8 | **Level 4 Floor - Shop drawings** |  | 2015-02-05 | 2015-03-24 |  |  |  |  |
| SD-CS-L4-1322 |  | Preparation & Submittals of SD of Block Works at L4 | 30d | 2015-02-05 | 2015-03-12 | SD-CS-L3-302 SS+7d | 17d | 0d | Shop Drawings Submittals [60 h] |
| SD-CS-L4-1332 |  | Review & Approval of SD of Block Works at L4 | 30d | 2015-02-18 | 2015-03-24 | SD-CS-L4-1322 SS+10d, SD-CS-L4-1322 FF+10d | 97d | 25d | Shop Drawings Approval [40 h] |
|  | 9 | **Level 5 Floor - Shop drawings** |  | 2015-02-15 | 2015-04-01 |  |  |  |  |
| SD-CS-L5-342 |  | Preparation & Submittals of SD of Block Works at L5 | 30d | 2015-02-15 | 2015-03-21 | SD-CS-L4-1322 SS+7d | 17d | 0d | Shop Drawings Submittals [60 h] |
| SD-CS-L5-352 |  | Review & Approval of SD of Block Works at L5 | 30d | 2015-02-26 | 2015-04-01 | SD-CS-L5-342 SS+10d, SD-CS-L5-342 FF+10d | 90d | 18d | Shop Drawings Approval [40 h] |
|  | 10 | **Level 6 Floor - Shop drawings** |  | 2015-02-23 | 2015-04-09 |  |  |  |  |
| SD-CS-L6-362 |  | Preparation & Submittals of SD of Block Works at L6 | 30d | 2015-02-23 | 2015-03-29 | SD-CS-L5-342 SS+7d | 17d | 0d | Shop Drawings Submittals [60 h] |
| SD-CS-L6-372 |  | Review & Approval of SD of Block Works at L6 | 30d | 2015-03-07 | 2015-04-09 | SD-CS-L6-362 SS+10d, SD-CS-L6-362 FF+10d | 83d | 18d | Shop Drawings Approval [40 h] |
|  | 11 | **Level 7 Floor - Shop drawings** |  | 2015-03-03 | 2015-04-18 |  |  |  |  |
| SD-CS-L7-382 |  | Preparation & Submittals of SD of Block Works at L7 | 30d | 2015-03-03 | 2015-04-06 | SD-CS-L6-362 SS+7d | 17d | 0d | Shop Drawings Submittals [60 h] |
| SD-CS-L7-392 |  | Review & Approval of SD of Block Works at L7 | 30d | 2015-03-15 | 2015-04-18 | SD-CS-L7-382 SS+10d, SD-CS-L7-382 FF+10d | 76d | 18d | Shop Drawings Approval [40 h] |
|  | 12 | **Level 8 Floor - Shop drawings** |  | 2015-03-11 | 2015-04-26 |  |  |  |  |
| SD-CS-L8-402 |  | Preparation & Submittals of SD of Block Works at L8 | 30d | 2015-03-11 | 2015-04-14 | SD-CS-L7-382 SS+7d | 17d | 0d | Shop Drawings Submittals [60 h] |
| SD-CS-L8-412 |  | Review & Approval of SD of Block Works at L8 | 30d | 2015-03-23 | 2015-04-26 | SD-CS-L8-402 SS+10d, SD-CS-L8-402 FF+10d | 69d | 18d | Shop Drawings Approval [40 h] |
|  | 13 | **Level 9 Floor - Shop drawings** |  | 2015-03-19 | 2015-05-04 |  |  |  |  |
| SD-CS-L9-422 |  | Preparation & Submittals of SD of Block Works at L9 | 30d | 2015-03-19 | 2015-04-22 | SD-CS-L8-402 SS+7d | 17d | 0d | Shop Drawings Submittals [60 h] |
| SD-CS-L9-432 |  | Review & Approval of SD of Block Works at L9 | 30d | 2015-03-31 | 2015-05-04 | SD-CS-L9-422 SS+10d, SD-CS-L9-422 FF+7d | 62d | 18d | Shop Drawings Approval [40 h] |
|  | 14 | **Level 10 Floor - Shop drawings** |  | 2015-03-31 | 2015-05-16 |  |  |  |  |
| SD-CS-L10-442 |  | Preparation & Submittals of SD of Block Works at L10 | 30d | 2015-03-31 | 2015-05-04 | SD-CS-L9-422 SS+10d | 17d | 0d | Shop Drawings Submittals [60 h] |
| SD-CS-L10-452 |  | Review & Approval of SD of Block Works at L10 | 30d | 2015-04-12 | 2015-05-16 | SD-CS-L10-442 SS+10d, SD-CS-L10-442 FF+10d | 66d | 22d | Shop Drawings Approval [40 h] |
|  | 15 | **Level 11 Floor - Shop drawings** |  | 2015-04-08 | 2015-05-24 |  |  |  |  |
| SD-CS-L11-462 |  | Preparation & Submittals of SD of Block Works at L11 | 30d | 2015-04-08 | 2015-05-12 | SD-CS-L10-442 SS+7d | 17d | 0d | Shop Drawings Submittals [60 h] |
| SD-CS-L11-472 |  | Review & Approval of SD of Block Works at L11 | 30d | 2015-04-20 | 2015-05-24 | SD-CS-L11-462 SS+10d, SD-CS-L11-462 FF+10d | 59d | 15d | Shop Drawings Approval [40 h] |

| ID | WBS | Activity | Duration | Start | Finish | Predecessors | Total float | Free float | Resources |
| --- | --- | --- | --- | --- | --- | --- | --- | --- | --- |
|  | 16 | **Level 12 Floor - Shop drawings** |  | 2015-04-16 | 2015-06-01 |  |  |  |  |
| SD-CS-L12-482 |  | Preparation & Submittals of SD of Block Works at L12 | 30d | 2015-04-16 | 2015-05-20 | SD-CS-L11-462 SS+7d | 17d | 0d | Shop Drawings Submittals [60 h] |
| SD-CS-L12-492 |  | Review & Approval of SD of Block Works at L12 | 30d | 2015-04-28 | 2015-06-01 | SD-CS-L12-482 SS+10d, SD-CS-L12-482 FF+10d | 52d | 15d | Shop Drawings Approval [40 h] |
|  | 17 | **Level 13 Floor - Shop drawings** |  | 2015-04-25 | 2015-06-09 |  |  |  |  |
| SD-CS-L13-502 |  | Preparation & Submittals of SD of Block Works at L13 | 30d | 2015-04-25 | 2015-05-28 | SD-CS-L12-482 SS+7d | 17d | 0d | Shop Drawings Submittals [60 h] |
| SD-CS-L13-512 |  | Review & Approval of SD of Block Works at L13 | 30d | 2015-05-06 | 2015-06-09 | SD-CS-L13-502 SS+10d, SD-CS-L13-502 FF+10d | 59d | 22d | Shop Drawings Approval [40 h] |
|  | 18 | **Level 14 Floor - Shop drawings** |  | 2015-05-03 | 2015-06-17 |  |  |  |  |
| SD-CS-L14-522 |  | Preparation & Submittals of SD of Block Works at L14 | 30d | 2015-05-03 | 2015-06-06 | SD-CS-L13-502 SS+7d | 17d | 0d | Shop Drawings Submittals [60 h] |
| SD-CS-L14-532 |  | Review & Approval of SD of Block Works at L14 | 30d | 2015-05-14 | 2015-06-17 | SD-CS-L14-522 SS+10d, SD-CS-L14-522 FF+10d | 52d | 15d | Shop Drawings Approval [40 h] |
|  | 19 | **Level 15 Floor - Shop drawings** |  | 2015-05-11 | 2015-06-25 |  |  |  |  |
| SD-CS-L15-542 |  | Preparation & Submittals of SD of Block Works at L15 | 30d | 2015-05-11 | 2015-06-14 | SD-CS-L14-522 SS+7d | 17d | 0d | Shop Drawings Submittals [60 h] |
| SD-CS-L15-552 |  | Review & Approval of SD of Block Works at L15 | 30d | 2015-05-23 | 2015-06-25 | SD-CS-L15-542 SS+10d, SD-CS-L15-542 FF+10d | 59d | 22d | Shop Drawings Approval [40 h] |
|  | 20 | **Level 16 Floor - Shop drawings** |  | 2015-05-19 | 2015-07-04 |  |  |  |  |
| SD-CS-L16-562 |  | Preparation & Submittals of SD of Block Works at L16 | 30d | 2015-05-19 | 2015-06-22 | SD-CS-L15-542 SS+7d | 17d | 0d | Shop Drawings Submittals [60 h] |
| SD-CS-L16-572 |  | Review & Approval of SD of Block Works C at L16 | 30d | 2015-05-31 | 2015-07-04 | SD-CS-L16-562 SS+10d, SD-CS-L16-562 FF+10d | 52d | 15d | Shop Drawings Approval [40 h] |
|  | 21 | **Level 17 Floor - Shop drawings** |  | 2015-05-27 | 2015-07-12 |  |  |  |  |
| SD-CS-L17-1342 |  | Preparation & Submittals of SD of Block Works at L17 | 30d | 2015-05-27 | 2015-06-30 | SD-CS-L16-562 SS+7d | 17d | 0d | Shop Drawings Submittals [60 h] |
| SD-CS-L17-1352 |  | Review & Approval of SD of Block Works at L17 | 30d | 2015-06-08 | 2015-07-12 | SD-CS-L17-1342 SS+10d, SD-CS-L17-1342 FF+10d | 59d | 22d | Shop Drawings Approval [40 h] |
|  | 22 | **Level 18 Floor - Shop drawings** |  | 2015-06-04 | 2015-07-22 |  |  |  |  |
| SD-CS-L18-602 |  | Preparation & Submittals of SD of Block Works at L18 | 30d | 2015-06-04 | 2015-07-08 | SD-CS-L17-1342 SS+7d | 17d | 0d | Shop Drawings Submittals [60 h] |
| SD-CS-L18-612 |  | Review & Approval of SD of Block Works at L18 | 30d | 2015-06-16 | 2015-07-22 | SD-CS-L18-602 SS+10d, SD-CS-L18-602 FF+10d | 52d | 17d | Shop Drawings Approval [40 h] |
|  | 23 | **Level 19 Floor - Shop drawings** |  | 2015-06-13 | 2015-07-30 |  |  |  |  |
| SD-CS-L19-622 |  | Preparation & Submittals of SD of Block Works at L19 | 30d | 2015-06-13 | 2015-07-19 | SD-CS-L18-602 SS+7d | 17d | 0d | Shop Drawings Submittals [60 h] |
| SD-CS-L19-632 |  | Review & Approval of SD of Block Works at L19 | 30d | 2015-06-24 | 2015-07-30 | SD-CS-L19-622 SS+10d, SD-CS-L19-622 FF+10d | 45d | 17d | Shop Drawings Approval [40 h] |

| ID | WBS | Activity | Duration | Start | Finish | Predecessors | Total float | Free float | Resources |
| --- | --- | --- | --- | --- | --- | --- | --- | --- | --- |
|  | 24 | **Level 20 Floor - Shop drawings** |  | 2015-06-21 | 2015-08-08 |  |  |  |  |
| SD-CS-L20-642 |  | Preparation & Submittals of SD of Block Works at L20 | 30d | 2015-06-21 | 2015-07-27 | SD-CS-L19-622 SS+7d | 17d | 0d | Shop Drawings Submittals [60 h] |
| SD-CS-L20-652 |  | Review & Approval of SD of Block Works at L20 | 30d | 2015-07-02 | 2015-08-08 | SD-CS-L20-642 SS+10d, SD-CS-L20-642 FF+10d | 38d | 17d | Shop Drawings Approval [40 h] |
|  | 25 | **Level 21 Floor - Shop drawings** |  | 2015-06-29 | 2015-08-16 |  |  |  |  |
| SD-CS-L21-662 |  | Preparation & Submittals of SD of Block Works at L21 | 30d | 2015-06-29 | 2015-08-04 | SD-CS-L20-642 SS+7d | 17d | 0d | Shop Drawings Submittals [60 h] |
| SD-CS-L21-672 |  | Review & Approval of SD of Block Works at L21 | 30d | 2015-07-11 | 2015-08-16 | SD-CS-L21-662 SS+10d, SD-CS-L21-662 FF+10d | 45d | 24d | Shop Drawings Approval [40 h] |
|  | 26 | **Level 22 Floor - Shop drawings** |  | 2015-07-07 | 2015-08-24 |  |  |  |  |
| SD-CS-L22-682 |  | Preparation & Submittals of SD of Block Works at L22 | 30d | 2015-07-07 | 2015-08-12 | SD-CS-L21-662 SS+7d | 17d | 0d | Shop Drawings Submittals [60 h] |
| SD-CS-L22-692 |  | Review & Approval of SD of Block Works at L22 | 30d | 2015-07-21 | 2015-08-24 | SD-CS-L22-682 SS+10d, SD-CS-L22-682 FF+10d | 38d | 17d | Shop Drawings Approval [40 h] |
|  | 27 | **Level 23 Floor - Shop drawings** |  | 2015-07-18 | 2015-09-01 |  |  |  |  |
| SD-CS-L23-702 |  | Preparation & Submittals of SD of Block Works at L23 | 30d | 2015-07-18 | 2015-08-20 | SD-CS-L22-682 SS+7d | 17d | 0d | Shop Drawings Submittals [60 h] |
| SD-CS-L23-712 |  | Review & Approval of SD of Block Works at L23 | 30d | 2015-07-29 | 2015-09-01 | SD-CS-L23-702 SS+10d, SD-CS-L23-702 FF+10d | 45d | 24d | Shop Drawings Approval [40 h] |
|  | 28 | **Level 24 Floor - Shop drawings** |  | 2015-07-26 | 2015-09-09 |  |  |  |  |
| SD-CS-L24-722 |  | Preparation & Submittals of SD of Block Works at L24 | 30d | 2015-07-26 | 2015-08-29 | SD-CS-L23-702 SS+7d | 17d | 0d | Shop Drawings Submittals [60 h] |
| SD-CS-L24-732 |  | Review & Approval of SD of Block Works at L24 | 30d | 2015-08-06 | 2015-09-09 | SD-CS-L24-722 SS+10d, SD-CS-L24-722 FF+10d | 38d | 17d | Shop Drawings Approval [40 h] |
|  | 29 | **Level 25 Floor - Shop drawings** |  | 2015-08-03 | 2015-09-17 |  |  |  |  |
| SD-CS-L25-742 |  | Preparation & Submittals of SD of Block Works at L25 | 30d | 2015-08-03 | 2015-09-06 | SD-CS-L24-722 SS+7d | 17d | 0d | Shop Drawings Submittals [60 h] |
| SD-CS-L25-752 |  | Review & Approval of SD of Block Works at L25 | 30d | 2015-08-15 | 2015-09-17 | SD-CS-L25-742 SS+10d, SD-CS-L25-742 FF+10d | 31d | 13d | Shop Drawings Approval [40 h] |
|  | 30 | **Level 26 Floor - Shop drawings** |  | 2015-08-11 | 2015-09-29 |  |  |  |  |
| SD-CS-L26-762 |  | Preparation & Submittals of SD of Block Works at L26 | 30d | 2015-08-11 | 2015-09-14 | SD-CS-L25-742 SS+7d | 17d | 0d | Shop Drawings Submittals [60 h] |
| SD-CS-L26-772 |  | Review & Approval of SD of Block Works at L26 | 30d | 2015-08-23 | 2015-09-29 | SD-CS-L26-762 SS+10d, SD-CS-L26-762 FF+10d | 24d | 12d | Shop Drawings Approval [40 h] |
|  | 31 | **Level 27 Floor - Shop drawings** |  | 2015-08-19 | 2015-10-07 |  |  |  |  |
| SD-CS-L27-782 |  | Preparation & Submittals of SD of Block Works at L27 | 30d | 2015-08-19 | 2015-09-26 | SD-CS-L26-762 SS+7d | 17d | 0d | Shop Drawings Submittals [60 h] |
| SD-CS-L27-792 |  | Review & Approval of SD of Block Works at L27 | 30d | 2015-08-31 | 2015-10-07 | SD-CS-L27-782 SS+10d, SD-CS-L27-782 FF+10d | 17d | 11d | Shop Drawings Approval [40 h] |

| ID | WBS | Activity | Duration | Start | Finish | Predecessors | Total float | Free float | Resources |
| --- | --- | --- | --- | --- | --- | --- | --- | --- | --- |
|  | 32 | **Level 28 Floor - Shop drawings** |  | 2015-08-27 | 2015-10-15 |  |  |  |  |
| SD-CS-L28-802 |  | Preparation & Submittals of SD of Block Works at L28 | 30d | 2015-08-27 | 2015-10-04 | SD-CS-L27-782 SS+7d | 18d | 0d | Shop Drawings Submittals [60 h] |
| SD-CS-L28-812 |  | Review & Approval of SD of Block Works at L28 | 30d | 2015-09-08 | 2015-10-15 | SD-CS-L28-802 SS+10d, SD-CS-L28-802 FF+10d | 56d | 18d | Shop Drawings Approval [40 h] |
|  | 33 | **Level 29 Floor - Shop drawings** |  | 2015-09-05 | 2015-10-24 |  |  |  |  |
| SD-CS-L29-822 |  | Preparation & Submittals of SD of Block Works at L29 | 30d | 2015-09-05 | 2015-10-12 | SD-CS-L28-802 SS+7d | 18d | 0d | Shop Drawings Submittals [60 h] |
| SD-CS-L29-832 |  | Review & Approval of SD of Block Works at L29 | 30d | 2015-09-16 | 2015-10-24 | SD-CS-L29-822 SS+10d, SD-CS-L29-822 FF+10d | 49d | 11d | Shop Drawings Approval [40 h] |
|  | 34 | **Level 30 Floor - Shop drawings** |  | 2015-09-13 | 2015-11-01 |  |  |  |  |
| SD-CS-L30-842 |  | Preparation & Submittals of SD of Block Works at L30 | 30d | 2015-09-13 | 2015-10-20 | SD-CS-L29-822 SS+7d | 18d | 0d | Shop Drawings Submittals [60 h] |
| SD-CS-L30-852 |  | Review & Approval of SD of Block Works at L30 | 30d | 2015-09-28 | 2015-11-01 | SD-CS-L30-842 SS+10d, SD-CS-L30-842 FF+10d | 42d | 8d | Shop Drawings Approval [40 h] |
|  | 35 | **Level 31 Floor - Shop drawings** |  | 2015-09-24 | 2015-11-09 |  |  |  |  |
| SD-CS-L31-862 |  | Preparation & Submittals of SD of Block Works at L31 | 30d | 2015-09-24 | 2015-10-28 | SD-CS-L30-842 SS+7d | 18d | 0d | Shop Drawings Submittals [60 h] |
| SD-CS-L31-872 |  | Review & Approval of SD of Block Works at L31 | 30d | 2015-10-06 | 2015-11-09 | SD-CS-L31-862 SS+10d, SD-CS-L31-862 FF+10d | 49d | 15d | Shop Drawings Approval [40 h] |
|  | 36 | **Level 32 Floor - Shop drawings** |  | 2015-10-03 | 2015-11-17 |  |  |  |  |
| SD-CS-L32-882 |  | Preparation & Submittals of SD of Block Works at L32 | 30d | 2015-10-03 | 2015-11-05 | SD-CS-L31-862 SS+7d | 18d | 0d | Shop Drawings Submittals [60 h] |
| SD-CS-L32-892 |  | Review & Approval of SD of Block Works at L32 | 30d | 2015-10-14 | 2015-11-17 | SD-CS-L32-882 SS+10d, SD-CS-L32-882 FF+10d | 42d | 9d | Shop Drawings Approval [40 h] |
|  | 37 | **Level 33 Floor - Shop drawings** |  | 2015-10-11 | 2015-11-25 |  |  |  |  |
| SD-CS-L33-902 |  | Preparation & Submittals of SD of Block Works at L33 | 30d | 2015-10-11 | 2015-11-14 | SD-CS-L32-882 SS+7d | 18d | 0d | Shop Drawings Submittals [60 h] |
| SD-CS-L33-912 |  | Review & Approval of SD of Block Works at L33 | 30d | 2015-10-22 | 2015-11-25 | SD-CS-L33-902 SS+10d, SD-CS-L33-902 FF+10d | 35d | 8d | Shop Drawings Approval [40 h] |
|  | 38 | **Level 34 Floor - Shop drawings** |  | 2015-10-19 | 2015-12-03 |  |  |  |  |
| SD-CS-L34-922 |  | Preparation & Submittals of SD of Block Works at L34 | 30d | 2015-10-19 | 2015-11-22 | SD-CS-L33-902 SS+7d | 18d | 0d | Shop Drawings Submittals [60 h] |
| SD-CS-L34-932 |  | Review & Approval of SD of Block Works at L34 | 30d | 2015-10-31 | 2015-12-03 | SD-CS-L34-922 SS+10d, SD-CS-L34-922 FF+10d | 28d | 7d | Shop Drawings Approval [40 h] |
|  | 39 | **Level 35 Floor - Shop drawings** |  | 2015-10-27 | 2015-12-12 |  |  |  |  |
| SD-CS-L35-942 |  | Preparation & Submittals of SD of Block Works at L35 | 30d | 2015-10-27 | 2015-11-30 | SD-CS-L34-922 SS+7d | 18d | 0d | Shop Drawings Submittals [60 h] |
| SD-CS-L35-952 |  | Review & Approval of SD of Block Works at L35 | 30d | 2015-11-08 | 2015-12-12 | SD-CS-L35-942 SS+10d, SD-CS-L35-942 FF+10d | 35d | 14d | Shop Drawings Approval [40 h] |

| ID | WBS | Activity | Duration | Start | Finish | Predecessors | Total float | Free float | Resources |
| --- | --- | --- | --- | --- | --- | --- | --- | --- | --- |
|  | 40 | **Level 36 Floor - Shop drawings** |  | 2015-11-02 | 2015-12-17 |  |  |  |  |
| SD-CS-L36-962 |  | Preparation & Submittals of SD of Block Works at L36 | 30d | 2015-11-02 | 2015-12-06 | SD-CS-L35-942 SS+5d | 18d | 0d | Shop Drawings Submittals [60 h] |
| SD-CS-L36-972 |  | Review & Approval of SD of Block Works at L36 | 30d | 2015-11-14 | 2015-12-17 | SD-CS-L36-962 SS+10d, SD-CS-L36-962 FF+10d | 30d | 9d | Shop Drawings Approval [40 h] |
|  | 41 | **Level 37 Floor - Shop drawings** |  | 2015-11-08 | 2015-12-24 |  |  |  |  |
| SD-CS-L37-982 |  | Preparation & Submittals of SD of Block Works at L37 | 30d | 2015-11-08 | 2015-12-12 | SD-CS-L36-962 SS+5d | 18d | 0d | Shop Drawings Submittals [60 h] |
| SD-CS-L37-992 |  | Review & Approval of SD of Block Works at L37 | 30d | 2015-11-19 | 2015-12-24 | SD-CS-L37-982 SS+10d, SD-CS-L37-982 FF+10d | 25d | 8d | Shop Drawings Approval [40 h] |
|  | 42 | **Level 38 Floor - Shop drawings** |  | 2015-11-14 | 2015-12-30 |  |  |  |  |
| SD-CS-L38-1002 |  | Preparation & Submittals of SD of Block Works at L38 | 30d | 2015-11-14 | 2015-12-17 | SD-CS-L37-982 SS+5d | 18d | 0d | Shop Drawings Submittals [60 h] |
| SD-CS-L38-1012 |  | Review & Approval of SD of Block Works at L38 | 30d | 2015-11-25 | 2015-12-30 | SD-CS-L38-1002 SS+10d, SD-CS-L38-1002 FF+10d | 20d | 9d | Shop Drawings Approval [40 h] |
|  | 43 | **Level 39 Floor - Shop drawings** |  | 2015-11-19 | 2016-01-05 |  |  |  |  |
| SD-CS-L39-1022 |  | Preparation & Submittals of SD of Block Works at L39 | 30d | 2015-11-19 | 2015-12-24 | SD-CS-L38-1002 SS+5d | 18d | 0d | Shop Drawings Submittals [60 h] |
| SD-CS-L39-1032 |  | Review & Approval of SD of Block Works at L39 | 30d | 2015-12-01 | 2016-01-05 | SD-CS-L39-1022 SS+10d, SD-CS-L39-1022 FF+10d | 29d | 18d | Shop Drawings Approval [40 h] |
|  | 44 | **Level 40 Floor - Shop drawings** |  | 2015-11-25 | 2016-01-11 |  |  |  |  |
| SD-CS-L40-1042 |  | Preparation & Submittals of SD of Block Works at L40 | 30d | 2015-11-25 | 2015-12-30 | SD-CS-L39-1022 SS+5d | 18d | 0d | Shop Drawings Submittals [60 h] |
| SD-CS-L40-1052 |  | Review & Approval of SD of Block Works at L40 | 30d | 2015-12-07 | 2016-01-11 | SD-CS-L40-1042 SS+10d, SD-CS-L40-1042 FF+10d | 24d | 13d | Shop Drawings Approval [40 h] |
|  | 45 | **Level 41 Floor - Shop drawings** |  | 2015-12-01 | 2016-01-17 |  |  |  |  |
| SD-CS-L41-1062 |  | Preparation & Submittals of SD of Block Works at L41 | 30d | 2015-12-01 | 2016-01-05 | SD-CS-L40-1042 SS+5d | 18d | 0d | Shop Drawings Submittals [60 h] |
| SD-CS-L41-1072 |  | Review & Approval of SD of Block Works at L41 | 30d | 2015-12-13 | 2016-01-17 | SD-CS-L41-1062 SS+10d, SD-CS-L41-1062 FF+10d | 19d | 12d | Shop Drawings Approval [40 h] |
|  | 46 | **Level 42 Floor - Shop drawings** |  | 2015-12-07 | 2016-01-23 |  |  |  |  |
| SD-CS-L42-1082 |  | Preparation & Submittals of SD of Block Works at L42 | 30d | 2015-12-07 | 2016-01-11 | SD-CS-L41-1062 SS+5d | 18d | 0d | Shop Drawings Submittals [60 h] |
| SD-CS-L42-1092 |  | Review & Approval of SD of Block Works at L42 | 30d | 2015-12-20 | 2016-01-23 | SD-CS-L42-1082 SS+10d, SD-CS-L42-1082 FF+10d | 28d | 21d | Shop Drawings Approval [40 h] |
|  | 47 | **Level 43 Floor - Shop drawings** |  | 2015-12-13 | 2016-01-28 |  |  |  |  |
| SD-CS-L43-1102 |  | Preparation & Submittals of SD of Block Works at L43 | 30d | 2015-12-13 | 2016-01-17 | SD-CS-L42-1082 SS+5d | 18d | 0d | Shop Drawings Submittals [60 h] |
| SD-CS-L43-1112 |  | Review & Approval of SD of Block Works at L43 | 30d | 2015-12-26 | 2016-01-28 | SD-CS-L43-1102 SS+10d, SD-CS-L43-1102 FF+10d | 23d | 16d | Shop Drawings Approval [40 h] |

| ID | WBS | Activity | Duration | Start | Finish | Predecessors | Total float | Free float | Resources |
| --- | --- | --- | --- | --- | --- | --- | --- | --- | --- |
|  | 48 | **Level 44 Floor - Shop drawings** |  | 2015-12-20 | 2016-02-03 |  |  |  |  |
| SD-CS-L44-1122 |  | Preparation & Submittals of SD of Block Works at L44 | 30d | 2015-12-20 | 2016-01-23 | SD-CS-L43-1102 SS+5d | 18d | 0d | Shop Drawings Submittals [60 h] |
| SD-CS-L44-1132 |  | Review & Approval of SD of Block Works at L44 | 30d | 2015-12-31 | 2016-02-03 | SD-CS-L44-1122 SS+10d, SD-CS-L44-1122 FF+10d | 18d | 15d | Shop Drawings Approval [40 h] |
|  | 49 | **Level 45 Floor - Shop drawings** |  | 2015-12-26 | 2016-02-09 |  |  |  |  |
| SD-CS-L45-1142 |  | Preparation & Submittals of SD of Block Works at L45 | 30d | 2015-12-26 | 2016-01-28 | SD-CS-L44-1122 SS+5d | 24d | 0d | Shop Drawings Submittals [60 h] |
| SD-CS-L45-1152 |  | Review & Approval of SD of Block Works at L45 | 30d | 2016-01-06 | 2016-02-09 | SD-CS-L45-1142 SS+10d, SD-CS-L45-1142 FF+10d | 27d | 24d | Shop Drawings Approval [40 h] |
|  | 50 | **Level 46 Floor - Shop drawings** |  | 2015-12-31 | 2016-02-16 |  |  |  |  |
| SD-CS-L46-1162 |  | Preparation & Submittals of SD of Block Works at L46 | 30d | 2015-12-31 | 2016-02-03 | SD-CS-L45-1142 SS+5d | 24d | 0d | Shop Drawings Submittals [60 h] |
| SD-CS-L46-1172 |  | Review & Approval of SD of Block Works at L46 | 30d | 2016-01-12 | 2016-02-16 | SD-CS-L46-1162 SS+10d, SD-CS-L46-1162 FF+10d | 35d | 19d | Shop Drawings Approval [40 h] |
|  | 53 | **Level 47 Floor - Shop drawings** |  | 2016-01-06 | 2016-02-22 |  |  |  |  |
| SD-CS-L47-1182 |  | Preparation & Submittals of SD of Block Works at L47 | 30d | 2016-01-06 | 2016-02-09 | SD-CS-L46-1162 SS+5d | 24d | 0d | Shop Drawings Submittals [60 h] |
| SD-CS-L47-1192 |  | Review & Approval of SD of Block Works at L47 | 30d | 2016-01-18 | 2016-02-22 | SD-CS-L47-1182 SS+10d, SD-CS-L47-1182 FF+10d | 30d | 18d | Shop Drawings Approval [40 h] |
|  | 51 | **Level 48 Floor - Shop drawings** |  | 2016-01-12 | 2016-02-28 |  |  |  |  |
| SD-CS-L48-1202 |  | Preparation & Submittals of SD of Block Works at L48 | 30d | 2016-01-12 | 2016-02-16 | SD-CS-L47-1182 SS+5d | 24d | 0d | Shop Drawings Submittals [60 h] |
| SD-CS-L48-1212 |  | Review & Approval of SD of Block Works at L48 | 30d | 2016-01-24 | 2016-02-28 | SD-CS-L48-1202 SS+10d, SD-CS-L48-1202 FF+10d | 29d | 19d | Shop Drawings Approval [40 h] |
|  | 52 | **Level 49 Floor - Shop drawings** |  | 2016-01-18 | 2016-03-05 |  |  |  |  |
| SD-CS-L49-1222 |  | Preparation & Submittals of SD of Block Works at L49 | 30d | 2016-01-18 | 2016-02-22 | SD-CS-L48-1202 SS+5d | 24d | 0d | Shop Drawings Submittals [60 h] |
| SD-CS-L49-1232 |  | Review & Approval of SD of Block Works at L49 | 30d | 2016-01-30 | 2016-03-05 | SD-CS-L49-1222 SS+10d, SD-CS-L49-1222 FF+10d | 24d | 21d | Shop Drawings Approval [40 h] |
|  | 54 | **Level 50 Floor - Shop drawings** |  | 2016-01-24 | 2016-03-10 |  |  |  |  |
| SD-CS-L50-1242 |  | Preparation & Submittals of SD of Block Works at L50 | 30d | 2016-01-24 | 2016-02-28 | SD-CS-L49-1222 SS+5d | 32d | 0d | Shop Drawings Submittals [60 h] |
| SD-CS-L50-1252 |  | Review & Approval of SD of Block Works at L50 | 30d | 2016-02-04 | 2016-03-10 | SD-CS-L50-1242 SS+10d, SD-CS-L50-1242 FF+10d | 35d | 22d | Shop Drawings Approval [40 h] |
|  | 55 | **Level 51 Floor - Shop drawings** |  | 2016-01-30 | 2016-03-16 |  |  |  |  |
| SD-CS-L51-1682 |  | Preparation & Submittals of SD of Block Works at L51 | 30d | 2016-01-30 | 2016-03-05 | SD-CS-L50-1242 SS+5d | 32d | 0d | Shop Drawings Submittals [60 h] |
| SD-CS-L51-1692 |  | Review & Approval of SD of Block Works at L51 | 30d | 2016-02-11 | 2016-03-16 | SD-CS-L51-1682 SS+10d, SD-CS-L51-1682 FF+10d | 32d | 17d | Shop Drawings Approval [40 h] |

| ID | WBS | Activity | Duration | Start | Finish | Predecessors | Total float | Free float | Resources |
| --- | --- | --- | --- | --- | --- | --- | --- | --- | --- |
|  | 2 | **Gypsum Boards Partition** |  | 2014-10-20 | 2016-01-20 |  |  |  |  |
|  | R | **Basement 3 Floor level - Shop drawings** |  | 2014-10-20 | 2014-12-04 |  |  |  |  |
| SD-CS-B3-362 |  | Preparation & Submittals of SD of Gypsum Board Partition at B3 | 30d | 2014-10-20 | 2014-11-23 | PQ-CS-C-772 | 112d | 0d | Shop Drawings Submittals [60 h] |
| SD-CS-B3-372 |  | Review & Approval of SD of Gypsum Board Partition at B3 | 30d | 2014-11-01 | 2014-12-04 | SD-CS-B3-362 SS+10d, SD-CS-B3-362 FF+10d | 297d | 291d | Shop Drawings Approval [40 h] |
|  | 1 | **Basement 2 Floor level - Shop drawings** |  | 2014-10-26 | 2014-12-10 |  |  |  |  |
| SD-CS-B3-342 |  | Preparation & Submittals of SD of Gypsum Board Partition at B2 | 30d | 2014-10-26 | 2014-11-29 | SD-CS-B3-362 SS+5d | 112d | 0d | Shop Drawings Submittals [60 h] |
| SD-CS-B3-352 |  | Review & Approval of SD of Gypsum Board Partition at B2 | 30d | 2014-11-06 | 2014-12-10 | SD-CS-B3-342 SS+10d, SD-CS-B3-342 FF+10d | 312d | 306d | Shop Drawings Approval [40 h] |
|  | 2 | **Basement 1 Floor level - Shop drawings** |  | 2014-11-01 | 2014-12-16 |  |  |  |  |
| SD-CS-B2-262 |  | Preparation & Submittals of SD of Gypsum Board Partition at B1 | 30d | 2014-11-01 | 2014-12-04 | SD-CS-B3-342 SS+5d | 112d | 0d | Shop Drawings Submittals [60 h] |
| SD-CS-B2-272 |  | Review & Approval of SD of Gypsum Board Partition at B1 | 30d | 2014-11-12 | 2014-12-16 | SD-CS-B2-262 SS+10d, SD-CS-B2-262 FF+10d | 333d | 321d | Shop Drawings Approval [40 h] |
|  | 3 | **Ground Floor level - Shop drawings** |  | 2014-12-15 | 2015-01-31 |  |  |  |  |
| SD-CS-B1-262 |  | Preparation & Submittals of SD of Gypsum Board Partition at GF | 30d | 2014-12-15 | 2015-01-19 | SD-CS-B2-262 SS+5d, G-CD-003 | 79d | 0d | Shop Drawings Submittals [60 h] |
| SD-CS-B1-272 |  | Review & Approval of SD of Gypsum Board Partition at GF | 30d | 2014-12-28 | 2015-01-31 | SD-CS-B1-262 SS+10d, SD-CS-B1-262 FF+10d | 87d | 25d | Shop Drawings Approval [40 h] |
|  | 4 | **Mezzanine Floor level - Shop drawings** |  | 2014-12-22 | 2015-02-05 |  |  |  |  |
| SD-CS-GF-262 |  | Preparation & Submittals of SD of Gypsum Board Partition at ML | 30d | 2014-12-22 | 2015-01-25 | SD-CS-B1-262 SS+5d | 79d | 0d | Shop Drawings Submittals [60 h] |
| SD-CS-GF-272 |  | Review & Approval of SD of Gypsum Board Partition at ML | 30d | 2015-01-03 | 2015-02-05 | SD-CS-GF-262 SS+10d, SD-CS-GF-262 FF+10d | 102d | 27d | Shop Drawings Approval [40 h] |
|  | 5 | **Level 1 Floor - Shop drawings** |  | 2014-12-28 | 2015-02-12 |  |  |  |  |
| SD-CS-L1-282 |  | Preparation & Submittals of SD of Gypsum Board Partition at L1 | 30d | 2014-12-28 | 2015-01-31 | SD-CS-GF-262 SS+5d | 117d | 0d | Shop Drawings Submittals [60 h] |
| SD-CS-L1-292 |  | Review & Approval of SD of Gypsum Board Partition at L1 | 30d | 2015-01-08 | 2015-02-12 | SD-CS-L1-282 SS+10d, SD-CS-L1-282 FF+10d | 117d | 29d | Shop Drawings Approval [40 h] |
|  | 6 | **Level 2 Floor - Shop drawings** |  | 2014-12-28 | 2015-02-12 |  |  |  |  |
| SD-CS-L2-302 |  | Preparation & Submittals of SD of Gypsum Board Partition at L2 | 30d | 2014-12-28 | 2015-01-31 | SD-CS-GF-262 SS+5d | 79d | 0d | Shop Drawings Submittals [60 h] |
| SD-CS-L2-312 |  | Review & Approval of SD of Gypsum Board Partition at L2 | 30d | 2015-01-08 | 2015-02-12 | SD-CS-L2-302 SS+10d, SD-CS-L2-302 FF+10d | 157d | 43d | Shop Drawings Approval [40 h] |
|  | 7 | **Level 3 Floor - Shop drawings** |  | 2015-01-03 | 2015-02-18 |  |  |  |  |
| SD-CS-L3-322 |  | Preparation & Submittals of SD ofGypsum Board Partition at L3 | 30d | 2015-01-03 | 2015-02-05 | SD-CS-L2-302 SS+5d | 79d | 0d | Shop Drawings Submittals [60 h] |
| SD-CS-L3-332 |  | Review & Approval of SD of Gypsum Board Partition at L3 | 30d | 2015-01-14 | 2015-02-18 | SD-CS-L3-322 SS+10d, SD-CS-L3-322 FF+10d | 166d | 45d | Shop Drawings Approval [40 h] |

| ID | WBS | Activity | Duration | Start | Finish | Predecessors | Total float | Free float | Resources |
| --- | --- | --- | --- | --- | --- | --- | --- | --- | --- |
|  | 8 | **Level 4 Floor - Shop drawings** |  | 2015-01-08 | 2015-02-24 |  |  |  |  |
| SD-CS-L4-1342 |  | Preparation & Submittals of SD of Gypsum Board Partition at L4 | 30d | 2015-01-08 | 2015-02-12 | SD-CS-L3-322 SS+5d | 79d | 0d | Shop Drawings Submittals [60 h] |
| SD-CS-L4-1352 |  | Review & Approval of SD of Gypsum Board Partition at L4 | 30d | 2015-01-20 | 2015-02-24 | SD-CS-L4-1342 SS+10d, SD-CS-L4-1342 FF+10d | 179d | 54d | Shop Drawings Approval [40 h] |
|  | 9 | **Level 5 Floor - Shop drawings** |  | 2015-01-14 | 2015-03-02 |  |  |  |  |
| SD-CS-L5-362 |  | Preparation & Submittals of SD of Gypsum Board Partition at L5 | 30d | 2015-01-14 | 2015-02-18 | SD-CS-L4-1342 SS+5d | 79d | 0d | Shop Drawings Submittals [60 h] |
| SD-CS-L5-372 |  | Review & Approval of SD of Gypsum Board Partition at L5 | 30d | 2015-01-26 | 2015-03-02 | SD-CS-L5-362 SS+10d, SD-CS-L5-362 FF+10d | 168d | 49d | Shop Drawings Approval [40 h] |
|  | 10 | **Level 6 Floor - Shop drawings** |  | 2015-01-20 | 2015-03-08 |  |  |  |  |
| SD-CS-L6-382 |  | Preparation & Submittals of SD of Gypsum Board Partition at L6 | 30d | 2015-01-20 | 2015-02-24 | SD-CS-L5-362 SS+5d | 79d | 0d | Shop Drawings Submittals [60 h] |
| SD-CS-L6-392 |  | Review & Approval of SD of Gypsum Board Partition at L6 | 30d | 2015-02-01 | 2015-03-08 | SD-CS-L6-382 SS+10d, SD-CS-L6-382 FF+10d | 185d | 51d | Shop Drawings Approval [40 h] |
|  | 11 | **Level 7 Floor - Shop drawings** |  | 2015-01-26 | 2015-03-14 |  |  |  |  |
| SD-CS-L7-402 |  | Preparation & Submittals of SD of Gypsum Board Partition at L7 | 30d | 2015-01-26 | 2015-03-02 | SD-CS-L6-382 SS+5d | 79d | 0d | Shop Drawings Submittals [60 h] |
| SD-CS-L7-412 |  | Review & Approval of SD of Gypsum Board Partition at L7 | 30d | 2015-02-07 | 2015-03-14 | SD-CS-L7-402 SS+10d, SD-CS-L7-402 FF+10d | 162d | 53d | Shop Drawings Approval [40 h] |
|  | 12 | **Level 8 Floor - Shop drawings** |  | 2015-02-01 | 2015-03-19 |  |  |  |  |
| SD-CS-L8-422 |  | Preparation & Submittals of SD of Gypsum Board Partition at L8 | 30d | 2015-02-01 | 2015-03-08 | SD-CS-L7-402 SS+5d | 79d | 0d | Shop Drawings Submittals [60 h] |
| SD-CS-L8-432 |  | Review & Approval of SD of Gypsum Board Partition at L8 | 30d | 2015-02-14 | 2015-03-19 | SD-CS-L8-422 SS+10d, SD-CS-L8-422 FF+10d | 187d | 55d | Shop Drawings Approval [40 h] |
|  | 13 | **Level 9 Floor - Shop drawings** |  | 2015-02-07 | 2015-03-25 |  |  |  |  |
| SD-CS-L9-442 |  | Preparation & Submittals of SD of Gypsum Board Partition at L9 | 30d | 2015-02-07 | 2015-03-14 | SD-CS-L8-422 SS+5d | 79d | 0d | Shop Drawings Submittals [60 h] |
| SD-CS-L9-452 |  | Review & Approval of SD of Gypsum Board Partition at L9 | 30d | 2015-02-19 | 2015-03-25 | SD-CS-L9-442 SS+10d, SD-CS-L9-442 FF+10d | 156d | 57d | Shop Drawings Approval [40 h] |
|  | 14 | **Level 10 Floor - Shop drawings** |  | 2015-02-14 | 2015-03-31 |  |  |  |  |
| SD-CS-L10-462 |  | Preparation & Submittals of SD of Gypsum Board Partition at L10 | 30d | 2015-02-14 | 2015-03-19 | SD-CS-L9-442 SS+5d | 79d | 0d | Shop Drawings Submittals [60 h] |
| SD-CS-L10-472 |  | Review & Approval of SD of Gypsum Board Partition at L10 | 30d | 2015-02-25 | 2015-03-31 | SD-CS-L10-462 SS+10d, SD-CS-L10-462 FF+10d | 181d | 66d | Shop Drawings Approval [40 h] |
|  | 15 | **Level 11 Floor - Shop drawings** |  | 2015-02-19 | 2015-04-06 |  |  |  |  |
| SD-CS-L11-482 |  | Preparation & Submittals of SD of Gypsum Board Partition at L11 | 30d | 2015-02-19 | 2015-03-25 | SD-CS-L10-462 SS+5d | 79d | 0d | Shop Drawings Submittals [60 h] |
| SD-CS-L11-492 |  | Review & Approval of SD of Gypsum Board Partition at L11 | 30d | 2015-03-03 | 2015-04-06 | SD-CS-L11-482 SS+10d, SD-CS-L11-482 FF+10d | 158d | 61d | Shop Drawings Approval [40 h] |

| ID | WBS | Activity | Duration | Start | Finish | Predecessors | Total float | Free float | Resources |
| --- | --- | --- | --- | --- | --- | --- | --- | --- | --- |
|  | 16 | **Level 12 Floor - Shop drawings** |  | 2015-02-25 | 2015-04-12 |  |  |  |  |
| SD-CS-L12-502 |  | Preparation & Submittals of SD of Gypsum Board Partition at L12 | 30d | 2015-02-25 | 2015-03-31 | SD-CS-L11-482 SS+5d | 79d | 0d | Shop Drawings Submittals [60 h] |
| SD-CS-L12-512 |  | Review & Approval of SD of Gypsum Board Partition at L12 | 30d | 2015-03-09 | 2015-04-12 | SD-CS-L12-502 SS+10d, SD-CS-L12-502 FF+10d | 179d | 63d | Shop Drawings Approval [40 h] |
|  | 17 | **Level 13 Floor - Shop drawings** |  | 2015-03-03 | 2015-04-18 |  |  |  |  |
| SD-CS-L13-522 |  | Preparation & Submittals of SD of Gypsum Board Partition at L13 | 30d | 2015-03-03 | 2015-04-06 | SD-CS-L12-502 SS+5d | 79d | 0d | Shop Drawings Submittals [60 h] |
| SD-CS-L13-532 |  | Review & Approval of SD of Gypsum Board Partition at L13 | 30d | 2015-03-15 | 2015-04-18 | SD-CS-L13-522 SS+10d, SD-CS-L13-522 FF+10d | 152d | 72d | Shop Drawings Approval [40 h] |
|  | 18 | **Level 14 Floor - Shop drawings** |  | 2015-03-09 | 2015-04-23 |  |  |  |  |
| SD-CS-L14-542 |  | Preparation & Submittals of SD of Gypsum Board Partition at L14 | 30d | 2015-03-09 | 2015-04-12 | SD-CS-L13-522 SS+5d | 79d | 0d | Shop Drawings Submittals [60 h] |
| SD-CS-L14-552 |  | Review & Approval of SD of Gypsum Board Partition at L14 | 30d | 2015-03-21 | 2015-04-23 | SD-CS-L14-542 SS+10d, SD-CS-L14-542 FF+10d | 177d | 67d | Shop Drawings Approval [40 h] |
|  | 19 | **Level 15 Floor - Shop drawings** |  | 2015-03-15 | 2015-04-29 |  |  |  |  |
| SD-CS-L15-562 |  | Preparation & Submittals of SD of Gypsum Board Partition at L15 | 30d | 2015-03-15 | 2015-04-18 | SD-CS-L14-542 SS+5d | 79d | 0d | Shop Drawings Submittals [60 h] |
| SD-CS-L15-572 |  | Review & Approval of SD of Gypsum Board Partition at L15 | 30d | 2015-03-26 | 2015-04-29 | SD-CS-L15-562 SS+10d, SD-CS-L15-562 FF+10d | 154d | 76d | Shop Drawings Approval [40 h] |
|  | 20 | **Level 16 Floor - Shop drawings** |  | 2015-03-21 | 2015-05-05 |  |  |  |  |
| SD-CS-L16-582 |  | Preparation & Submittals of SD of Gypsum Board Partition at L16 | 30d | 2015-03-21 | 2015-04-23 | SD-CS-L15-562 SS+5d | 79d | 0d | Shop Drawings Submittals [60 h] |
| SD-CS-L16-592 |  | Review & Approval of SD of Gypsum Board Partition at L16 | 30d | 2015-04-01 | 2015-05-05 | SD-CS-L16-582 SS+10d, SD-CS-L16-582 FF+10d | 179d | 71d | Shop Drawings Approval [40 h] |
|  | 21 | **Level 17 Floor - Shop drawings** |  | 2015-03-26 | 2015-05-11 |  |  |  |  |
| SD-CS-L17-1362 |  | Preparation & Submittals of SD of Gypsum Board Partition at L17 | 30d | 2015-03-26 | 2015-04-29 | SD-CS-L16-582 SS+5d | 79d | 0d | Shop Drawings Submittals [60 h] |
| SD-CS-L17-1372 |  | Review & Approval of SD of Gypsum Board Partition at L17 | 30d | 2015-04-07 | 2015-05-11 | SD-CS-L17-1362 SS+10d, SD-CS-L17-1362 FF+10d | 148d | 80d | Shop Drawings Approval [40 h] |
|  | 22 | **Level 18 Floor - Shop drawings** |  | 2015-04-01 | 2015-05-17 |  |  |  |  |
| SD-CS-L18-622 |  | Preparation & Submittals of SD of Gypsum Board Partition at L18 | 30d | 2015-04-01 | 2015-05-05 | SD-CS-L17-1362 SS+5d | 79d | 0d | Shop Drawings Submittals [60 h] |
| SD-CS-L18-632 |  | Review & Approval of SD of Gypsum Board Partition at L18 | 30d | 2015-04-13 | 2015-05-17 | SD-CS-L18-622 SS+10d, SD-CS-L18-622 FF+10d | 169d | 77d | Shop Drawings Approval [40 h] |
|  | 23 | **Level 19 Floor - Shop drawings** |  | 2015-04-07 | 2015-05-23 |  |  |  |  |
| SD-CS-L19-642 |  | Preparation & Submittals of SD of Gypsum Board Partition at L19 | 30d | 2015-04-07 | 2015-05-11 | SD-CS-L18-622 SS+5d | 79d | 0d | Shop Drawings Submittals [60 h] |
| SD-CS-L19-652 |  | Review & Approval of SD of Gypsum Board Partition at L19 | 30d | 2015-04-19 | 2015-05-23 | SD-CS-L19-642 SS+10d, SD-CS-L19-642 FF+10d | 150d | 79d | Shop Drawings Approval [40 h] |

| ID | WBS | Activity | Duration | Start | Finish | Predecessors | Total float | Free float | Resources |
| --- | --- | --- | --- | --- | --- | --- | --- | --- | --- |
|  | 24 | **Level 20 Floor - Shop drawings** |  | 2015-04-13 | 2015-05-28 |  |  |  |  |
| SD-CS-L20-662 |  | Preparation & Submittals of SD of Gypsum Board Partition at L20 | 30d | 2015-04-13 | 2015-05-17 | SD-CS-L19-642 SS+5d | 79d | 0d | Shop Drawings Submittals [60 h] |
| SD-CS-L20-672 |  | Review & Approval of SD of Gypsum Board Partition at L20 | 30d | 2015-04-25 | 2015-05-28 | SD-CS-L20-662 SS+10d, SD-CS-L20-662 FF+10d | 169d | 81d | Shop Drawings Approval [40 h] |
|  | 25 | **Level 21 Floor - Shop drawings** |  | 2015-04-19 | 2015-06-03 |  |  |  |  |
| SD-CS-L21-682 |  | Preparation & Submittals of SD of Gypsum Board Partition at L21 | 30d | 2015-04-19 | 2015-05-23 | SD-CS-L20-662 SS+5d | 79d | 0d | Shop Drawings Submittals [60 h] |
| SD-CS-L21-692 |  | Review & Approval of SD of Gypsum Board Partition at L21 | 30d | 2015-04-30 | 2015-06-03 | SD-CS-L21-682 SS+10d, SD-CS-L21-682 FF+10d | 144d | 90d | Shop Drawings Approval [40 h] |
|  | 26 | **Level 22 Floor - Shop drawings** |  | 2015-04-25 | 2015-06-09 |  |  |  |  |
| SD-CS-L22-702 |  | Preparation & Submittals of SD of Gypsum Board Partition at L22 | 30d | 2015-04-25 | 2015-05-28 | SD-CS-L21-682 SS+5d | 79d | 0d | Shop Drawings Submittals [60 h] |
| SD-CS-L22-712 |  | Review & Approval of SD of Gypsum Board Partition at L22 | 30d | 2015-05-06 | 2015-06-09 | SD-CS-L22-702 SS+10d, SD-CS-L22-702 FF+10d | 169d | 85d | Shop Drawings Approval [40 h] |
|  | 27 | **Level 23 Floor - Shop drawings** |  | 2015-04-30 | 2015-06-15 |  |  |  |  |
| SD-CS-L23-722 |  | Preparation & Submittals of SD of Gypsum Board Partition at L23 | 30d | 2015-04-30 | 2015-06-03 | SD-CS-L22-702 SS+5d | 79d | 0d | Shop Drawings Submittals [60 h] |
| SD-CS-L23-732 |  | Review & Approval of SD of Gypsum Board Partition at L23 | 30d | 2015-05-12 | 2015-06-15 | SD-CS-L23-722 SS+10d, SD-CS-L23-722 FF+10d | 146d | 94d | Shop Drawings Approval [40 h] |
|  | 28 | **Level 24 Floor - Shop drawings** |  | 2015-05-06 | 2015-06-21 |  |  |  |  |
| SD-CS-L24-742 |  | Preparation & Submittals of SD of Gypsum Board Partition at L24 | 30d | 2015-05-06 | 2015-06-09 | SD-CS-L23-722 SS+5d | 79d | 0d | Shop Drawings Submittals [60 h] |
| SD-CS-L24-752 |  | Review & Approval of SD of Gypsum Board Partition at L24 | 30d | 2015-05-18 | 2015-06-21 | SD-CS-L24-742 SS+10d, SD-CS-L24-742 FF+10d | 159d | 89d | Shop Drawings Approval [40 h] |
|  | 29 | **Level 25 Floor - Shop drawings** |  | 2015-05-12 | 2015-06-27 |  |  |  |  |
| SD-CS-L25-762 |  | Preparation & Submittals of SD of Gypsum Board Partition at L25 | 30d | 2015-05-12 | 2015-06-15 | SD-CS-L24-742 SS+5d | 79d | 0d | Shop Drawings Submittals [60 h] |
| SD-CS-L25-772 |  | Review & Approval of SD of Gypsum Board Partition at L25 | 30d | 2015-05-24 | 2015-06-27 | SD-CS-L25-762 SS+10d, SD-CS-L25-762 FF+10d | 140d | 87d | Shop Drawings Approval [40 h] |
|  | 30 | **Level 26 Floor - Shop drawings** |  | 2015-05-18 | 2015-07-02 |  |  |  |  |
| SD-CS-L26-782 |  | Preparation & Submittals of SD of Gypsum Board Partition at L26 | 30d | 2015-05-18 | 2015-06-21 | SD-CS-L25-762 SS+5d | 79d | 0d | Shop Drawings Submittals [60 h] |
| SD-CS-L26-792 |  | Review & Approval of SD of Gypsum Board Partition at L26 | 30d | 2015-05-30 | 2015-07-02 | SD-CS-L26-782 SS+10d, SD-CS-L26-782 FF+10d | 159d | 88d | Shop Drawings Approval [40 h] |
|  | 31 | **Level 27 Floor - Shop drawings** |  | 2015-05-24 | 2015-07-08 |  |  |  |  |
| SD-CS-L27-802 |  | Preparation & Submittals of SD of Gypsum Board Partition at L27 | 30d | 2015-05-24 | 2015-06-27 | SD-CS-L26-782 SS+5d | 79d | 0d | Shop Drawings Submittals [60 h] |
| SD-CS-L27-812 |  | Review & Approval of SD of Gypsum Board Partition at L27 | 30d | 2015-06-04 | 2015-07-08 | SD-CS-L27-802 SS+10d, SD-CS-L27-802 FF+10d | 142d | 89d | Shop Drawings Approval [40 h] |

| ID | WBS | Activity | Duration | Start | Finish | Predecessors | Total float | Free float | Resources |
| --- | --- | --- | --- | --- | --- | --- | --- | --- | --- |
|  | 32 | **Level 28 Floor - Shop drawings** |  | 2015-05-30 | 2015-07-14 |  |  |  |  |
| SD-CS-L28-822 |  | Preparation & Submittals of SD of Gypsum Board Partition at L28 | 30d | 2015-05-30 | 2015-07-02 | SD-CS-L27-802 SS+5d | 79d | 0d | Shop Drawings Submittals [60 h] |
| SD-CS-L28-832 |  | Review & Approval of SD of Gypsum Board Partition at L28 | 30d | 2015-06-10 | 2015-07-14 | SD-CS-L28-822 SS+10d, SD-CS-L28-822 FF+10d | 161d | 98d | Shop Drawings Approval [40 h] |
|  | 33 | **Level 29 Floor - Shop drawings** |  | 2015-06-04 | 2015-07-22 |  |  |  |  |
| SD-CS-L29-842 |  | Preparation & Submittals of SD of Gypsum Board Partition at L29 | 30d | 2015-06-04 | 2015-07-08 | SD-CS-L28-822 SS+5d | 79d | 0d | Shop Drawings Submittals [60 h] |
| SD-CS-L29-852 |  | Review & Approval of SD of Gypsum Board Partition at L29 | 30d | 2015-06-16 | 2015-07-22 | SD-CS-L29-842 SS+10d, SD-CS-L29-842 FF+10d | 136d | 93d | Shop Drawings Approval [40 h] |
|  | 34 | **Level 30 Floor - Shop drawings** |  | 2015-06-10 | 2015-07-28 |  |  |  |  |
| SD-CS-L30-862 |  | Preparation & Submittals of SD of Gypsum Board Partition at L30 | 30d | 2015-06-10 | 2015-07-14 | SD-CS-L29-842 SS+5d | 79d | 0d | Shop Drawings Submittals [60 h] |
| SD-CS-L30-872 |  | Review & Approval of SD of Gypsum Board Partition at L30 | 30d | 2015-06-22 | 2015-07-28 | SD-CS-L30-862 SS+10d, SD-CS-L30-862 FF+10d | 149d | 92d | Shop Drawings Approval [40 h] |
|  | 35 | **Level 31 Floor - Shop drawings** |  | 2015-06-18 | 2015-08-05 |  |  |  |  |
| SD-CS-L31-882 |  | Preparation & Submittals of SD of Gypsum Board Partition at L31 | 30d | 2015-06-18 | 2015-07-25 | SD-CS-L30-862 SS+7d | 79d | 0d | Shop Drawings Submittals [60 h] |
| SD-CS-L31-892 |  | Review & Approval of SD of Gypsum Board Partition at L31 | 30d | 2015-06-30 | 2015-08-05 | SD-CS-L31-882 SS+10d, SD-CS-L31-882 FF+10d | 136d | 99d | Shop Drawings Approval [40 h] |
|  | 36 | **Level 32 Floor - Shop drawings** |  | 2015-06-27 | 2015-08-13 |  |  |  |  |
| SD-CS-L32-902 |  | Preparation & Submittals of SD of Gypsum Board Partition at L32 | 30d | 2015-06-27 | 2015-08-02 | SD-CS-L31-882 SS+7d | 79d | 0d | Shop Drawings Submittals [60 h] |
| SD-CS-L32-912 |  | Review & Approval of SD of Gypsum Board Partition at L32 | 30d | 2015-07-08 | 2015-08-13 | SD-CS-L32-902 SS+10d, SD-CS-L32-902 FF+10d | 145d | 93d | Shop Drawings Approval [40 h] |
|  | 37 | **Level 33 Floor - Shop drawings** |  | 2015-07-05 | 2015-08-22 |  |  |  |  |
| SD-CS-L33-922 |  | Preparation & Submittals of SD of Gypsum Board Partition at L33 | 30d | 2015-07-05 | 2015-08-10 | SD-CS-L32-902 SS+7d | 79d | 0d | Shop Drawings Submittals [60 h] |
| SD-CS-L33-932 |  | Review & Approval of SD of Gypsum Board Partition at L33 | 30d | 2015-07-19 | 2015-08-22 | SD-CS-L33-922 SS+10d, SD-CS-L33-922 FF+10d | 126d | 92d | Shop Drawings Approval [40 h] |
|  | 38 | **Level 34 Floor - Shop drawings** |  | 2015-07-13 | 2015-08-30 |  |  |  |  |
| SD-CS-L34-942 |  | Preparation & Submittals of SD of Gypsum Board Partition at L34 | 30d | 2015-07-13 | 2015-08-18 | SD-CS-L33-922 SS+7d | 79d | 0d | Shop Drawings Submittals [60 h] |
| SD-CS-L34-952 |  | Review & Approval of SD of Gypsum Board Partition at L34 | 30d | 2015-07-27 | 2015-08-30 | SD-CS-L34-942 SS+10d, SD-CS-L34-942 FF+10d | 143d | 91d | Shop Drawings Approval [40 h] |
|  | 39 | **Level 35 Floor - Shop drawings** |  | 2015-07-23 | 2015-09-07 |  |  |  |  |
| SD-CS-L35-962 |  | Preparation & Submittals of SD of Gypsum Board Partition at L35 | 30d | 2015-07-23 | 2015-08-26 | SD-CS-L34-942 SS+7d | 79d | 0d | Shop Drawings Submittals [60 h] |
| SD-CS-L35-972 |  | Review & Approval of SD of Gypsum Board Partition at L35 | 30d | 2015-08-04 | 2015-09-07 | SD-CS-L35-962 SS+10d, SD-CS-L35-962 FF+10d | 124d | 98d | Shop Drawings Approval [40 h] |

| ID | WBS | Activity | Duration | Start | Finish | Predecessors | Total float | Free float | Resources |
| --- | --- | --- | --- | --- | --- | --- | --- | --- | --- |
|  | 40 | **Level 36 Floor - Shop drawings** |  | 2015-08-01 | 2015-09-15 |  |  |  |  |
| SD-CS-L36-982 |  | Preparation & Submittals of SD of Gypsum Board Partition at L36 | 30d | 2015-08-01 | 2015-09-03 | SD-CS-L35-962 SS+7d | 79d | 0d | Shop Drawings Submittals [60 h] |
| SD-CS-L36-992 |  | Review & Approval of SD of Gypsum Board Partition at L36 | 30d | 2015-08-12 | 2015-09-15 | SD-CS-L36-982 SS+10d, SD-CS-L36-982 FF+10d | 127d | 91d | Shop Drawings Approval [40 h] |
|  | 41 | **Level 37 Floor - Shop drawings** |  | 2015-08-09 | 2015-09-27 |  |  |  |  |
| SD-CS-L37-1002 |  | Preparation & Submittals of SD of Gypsum Board Partition at L37 | 30d | 2015-08-09 | 2015-09-12 | SD-CS-L36-982 SS+7d | 79d | 0d | Shop Drawings Submittals [60 h] |
| SD-CS-L37-1012 |  | Review & Approval of SD of Gypsum Board Partition at L37 | 30d | 2015-08-20 | 2015-09-27 | SD-CS-L37-1002 SS+10d, SD-CS-L37-1002 FF+10d | 114d | 88d | Shop Drawings Approval [40 h] |
|  | 42 | **Level 38 Floor - Shop drawings** |  | 2015-08-17 | 2015-10-05 |  |  |  |  |
| SD-CS-L38-1022 |  | Preparation & Submittals of SD of Gypsum Board Partition at L38 | 30d | 2015-08-17 | 2015-09-23 | SD-CS-L37-1002 SS+7d | 79d | 0d | Shop Drawings Submittals [60 h] |
| SD-CS-L38-1032 |  | Review & Approval of SD of Gypsum Board Partition at L38 | 30d | 2015-08-29 | 2015-10-05 | SD-CS-L38-1022 SS+10d, SD-CS-L38-1022 FF+10d | 133d | 87d | Shop Drawings Approval [40 h] |
|  | 43 | **Level 39 Floor - Shop drawings** |  | 2015-08-25 | 2015-10-13 |  |  |  |  |
| SD-CS-L39-1042 |  | Preparation & Submittals of SD of Gypsum Board Partition at L39 | 30d | 2015-08-25 | 2015-10-01 | SD-CS-L38-1022 SS+7d | 79d | 0d | Shop Drawings Submittals [60 h] |
| SD-CS-L39-1052 |  | Review & Approval of SD of Gypsum Board Partition at L39 | 30d | 2015-09-06 | 2015-10-13 | SD-CS-L39-1042 SS+10d, SD-CS-L39-1042 FF+10d | 112d | 94d | Shop Drawings Approval [40 h] |
|  | 44 | **Level 40 Floor - Shop drawings** |  | 2015-09-02 | 2015-10-21 |  |  |  |  |
| SD-CS-L40-1062 |  | Preparation & Submittals of SD of Gypsum Board Partition at L40 | 30d | 2015-09-02 | 2015-10-10 | SD-CS-L39-1042 SS+7d | 79d | 0d | Shop Drawings Submittals [60 h] |
| SD-CS-L40-1072 |  | Review & Approval of SD of Gypsum Board Partition at L40 | 30d | 2015-09-14 | 2015-10-21 | SD-CS-L40-1062 SS+10d, SD-CS-L40-1062 FF+10d | 121d | 87d | Shop Drawings Approval [40 h] |
|  | 45 | **Level 41 Floor - Shop drawings** |  | 2015-09-10 | 2015-10-29 |  |  |  |  |
| SD-CS-L41-1082 |  | Preparation & Submittals of SD of Gypsum Board Partition at L41 | 30d | 2015-09-10 | 2015-10-18 | SD-CS-L40-1062 SS+7d | 79d | 0d | Shop Drawings Submittals [60 h] |
| SD-CS-L41-1092 |  | Review & Approval of SD of Gypsum Board Partition at L41 | 30d | 2015-09-26 | 2015-10-29 | SD-CS-L41-1082 SS+10d, SD-CS-L41-1082 FF+10d | 102d | 84d | Shop Drawings Approval [40 h] |
|  | 46 | **Level 42 Floor - Shop drawings** |  | 2015-09-19 | 2015-11-07 |  |  |  |  |
| SD-CS-L42-1102 |  | Preparation & Submittals of SD of Gypsum Board Partition at L42 | 30d | 2015-09-19 | 2015-10-26 | SD-CS-L41-1082 SS+7d | 79d | 0d | Shop Drawings Submittals [60 h] |
| SD-CS-L42-1112 |  | Review & Approval of SD of Gypsum Board Partition at L42 | 30d | 2015-10-04 | 2015-11-07 | SD-CS-L42-1102 SS+10d, SD-CS-L42-1102 FF+10d | 105d | 91d | Shop Drawings Approval [40 h] |
|  | 47 | **Level 43 Floor - Shop drawings** |  | 2015-09-30 | 2015-11-15 |  |  |  |  |
| SD-CS-L43-1122 |  | Preparation & Submittals of SD of Gypsum Board Partition at L43 | 30d | 2015-09-30 | 2015-11-03 | SD-CS-L42-1102 SS+7d | 79d | 0d | Shop Drawings Submittals [60 h] |
| SD-CS-L43-1132 |  | Review & Approval of SD of Gypsum Board Partition at L43 | 30d | 2015-10-12 | 2015-11-15 | SD-CS-L43-1122 SS+10d, SD-CS-L43-1122 FF+10d | 102d | 84d | Shop Drawings Approval [40 h] |

| ID | WBS | Activity | Duration | Start | Finish | Predecessors | Total float | Free float | Resources |
| --- | --- | --- | --- | --- | --- | --- | --- | --- | --- |
|  | 48 | **Level 44 Floor - Shop drawings** |  | 2015-10-08 | 2015-11-23 |  |  |  |  |
| SD-CS-L44-1142 |  | Preparation & Submittals of SD of Gypsum Board Partition at L44 | 30d | 2015-10-08 | 2015-11-11 | SD-CS-L43-1122 SS+7d | 79d | 0d | Shop Drawings Submittals [60 h] |
| SD-CS-L44-1152 |  | Review & Approval of SD of Gypsum Board Partition at L44 | 30d | 2015-10-20 | 2015-11-23 | SD-CS-L44-1142 SS+10d, SD-CS-L44-1142 FF+10d | 111d | 81d | Shop Drawings Approval [40 h] |
|  | 49 | **Level 45 Floor - Shop drawings** |  | 2015-10-17 | 2015-12-01 |  |  |  |  |
| SD-CS-L45-1162 |  | Preparation & Submittals of SD of Gypsum Board Partition at L45 | 30d | 2015-10-17 | 2015-11-19 | SD-CS-L44-1142 SS+7d | 79d | 0d | Shop Drawings Submittals [60 h] |
| SD-CS-L45-1172 |  | Review & Approval of SD of Gypsum Board Partition at L45 | 30d | 2015-10-28 | 2015-12-01 | SD-CS-L45-1162 SS+10d, SD-CS-L45-1162 FF+10d | 90d | 87d | Shop Drawings Approval [40 h] |
|  | 50 | **Level 46 Floor - Shop drawings** |  | 2015-10-25 | 2015-12-09 |  |  |  |  |
| SD-CS-L46-1182 |  | Preparation & Submittals of SD of Gypsum Board Partition at L46 | 30d | 2015-10-25 | 2015-11-28 | SD-CS-L45-1162 SS+7d | 79d | 0d | Shop Drawings Submittals [60 h] |
| SD-CS-L46-1192 |  | Review & Approval of SD of Gypsum Board Partition at L46 | 30d | 2015-11-05 | 2015-12-09 | SD-CS-L46-1182 SS+10d, SD-CS-L46-1182 FF+10d | 102d | 81d | Shop Drawings Approval [40 h] |
|  | 53 | **Level 47 Floor - Shop drawings** |  | 2015-11-02 | 2015-12-17 |  |  |  |  |
| SD-CS-L47-1202 |  | Preparation & Submittals of SD of Gypsum Board Partition at L47 | 30d | 2015-11-02 | 2015-12-06 | SD-CS-L46-1182 SS+7d | 79d | 0d | Shop Drawings Submittals [60 h] |
| SD-CS-L47-1212 |  | Review & Approval of SD of Gypsum Board Partition at L47 | 30d | 2015-11-14 | 2015-12-17 | SD-CS-L47-1202 SS+10d, SD-CS-L47-1202 FF+10d | 90d | 78d | Shop Drawings Approval [40 h] |
|  | 51 | **Level 48 Floor - Shop drawings** |  | 2015-11-10 | 2015-12-27 |  |  |  |  |
| SD-CS-L48-1222 |  | Preparation & Submittals of SD of Gypsum Board Partition at L48 | 30d | 2015-11-10 | 2015-12-14 | SD-CS-L47-1202 SS+7d | 79d | 0d | Shop Drawings Submittals [60 h] |
| SD-CS-L48-1232 |  | Review & Approval of SD of Gypsum Board Partition at L48 | 30d | 2015-11-22 | 2015-12-27 | SD-CS-L48-1222 SS+10d, SD-CS-L48-1222 FF+10d | 83d | 72d | Shop Drawings Approval [40 h] |
|  | 52 | **Level 49 Floor - Shop drawings** |  | 2015-11-18 | 2016-01-04 |  |  |  |  |
| SD-CS-L49-1242 |  | Preparation & Submittals of SD of Gypsum Board Partition at L49 | 30d | 2015-11-18 | 2015-12-23 | SD-CS-L48-1222 SS+7d | 79d | 0d | Shop Drawings Submittals [60 h] |
| SD-CS-L49-1252 |  | Review & Approval of SD of Gypsum Board Partition at L49 | 30d | 2015-11-30 | 2016-01-04 | SD-CS-L49-1242 SS+10d, SD-CS-L49-1242 FF+10d | 80d | 77d | Shop Drawings Approval [40 h] |
|  | 54 | **Level 50 Floor - Shop drawings** |  | 2015-11-26 | 2016-01-12 |  |  |  |  |
| SD-CS-L50-1262 |  | Preparation & Submittals of SD of Gypsum Board Partition at L50 | 30d | 2015-11-26 | 2015-12-31 | SD-CS-L49-1242 SS+7d | 79d | 0d | Shop Drawings Submittals [60 h] |
| SD-CS-L50-1272 |  | Review & Approval of SD of Gypsum Board Partition at L50 | 30d | 2015-12-08 | 2016-01-12 | SD-CS-L50-1262 SS+10d, SD-CS-L50-1262 FF+10d | 89d | 76d | Shop Drawings Approval [40 h] |
|  | 55 | **Level 51 Floor - Shop drawings** |  | 2015-12-05 | 2016-01-20 |  |  |  |  |
| SD-CS-L51-1742 |  | Preparation & Submittals of SD of Gypsum Board Partition at L51 | 30d | 2015-12-05 | 2016-01-09 | SD-CS-L50-1262 SS+7d | 79d | 0d | Shop Drawings Submittals [60 h] |
| SD-CS-L51-1752 |  | Review & Approval of SD of Gypsum Board Partition at L51 | 30d | 2015-12-16 | 2016-01-20 | SD-CS-L51-1742 SS+10d, SD-CS-L51-1742 FF+10d | 79d | 64d | Shop Drawings Approval [40 h] |

| ID | WBS | Activity | Duration | Start | Finish | Predecessors | Total float | Free float | Resources | Cost |
| --- | --- | --- | --- | --- | --- | --- | --- | --- | --- | --- |
|  | 3 | **Floor Finishes** |  | 2015-03-11 | 2016-07-17 |  |  |  |  |  |
|  | R | **Basement 3 Floor level - Shop drawings** |  | 2015-03-11 | 2015-04-26 |  |  |  |  |  |
| SD-CS-B3-402 |  | Preparation & Submittals of SD of Floor Finishes at B3 | 30d | 2015-03-11 | 2015-04-14 | PQ-CS-C-812, PQ-CS-C-832, PQ-CS-C-852, PQ-CS-C-872, PQ-CS-C-932 | 88d | 0d | Shop Drawings Submittals [60 h] | 762.34 |
| SD-CS-B3-412 |  | Review & Approval of SD of Floor Finishes Partition at B3 | 30d | 2015-03-23 | 2015-04-26 | SD-CS-B3-402 SS+10d, SD-CS-B3-402 FF+10d | 419d | 313d | Shop Drawings Approval [40 h] | 762.34 |
|  | 1 | **Basement 2 Floor level - Shop drawings** |  | 2015-03-19 | 2015-05-04 |  |  |  |  |  |
| SD-CS-B3-382 |  | Preparation & Submittals of SD of Floor Finishes at B2 | 30d | 2015-03-19 | 2015-04-22 | SD-CS-B3-402 SS+7d | 88d | 0d | Shop Drawings Submittals [60 h] | 762.34 |
| SD-CS-B3-392 |  | Review & Approval of SD of Floor Finishes at B2 | 30d | 2015-03-31 | 2015-05-04 | SD-CS-B3-382 SS+10d, SD-CS-B3-382 FF+10d | 351d | 336d | Shop Drawings Approval [40 h] | 762.34 |
|  | 2 | **Basement 1 Floor level - Shop drawings** |  | 2015-03-28 | 2015-05-12 |  |  |  |  |  |
| SD-CS-B2-282 |  | Preparation & Submittals of SD of Floor Finishes at B1 | 30d | 2015-03-28 | 2015-04-30 | SD-CS-B3-382 SS+7d | 88d | 0d | Shop Drawings Submittals [60 h] | 762.34 |
| SD-CS-B2-292 |  | Review & Approval of SD of Floor Finishes at B1 | 30d | 2015-04-08 | 2015-05-12 | SD-CS-B2-282 SS+10d, SD-CS-B2-282 FF+10d | 369d | 349d | Shop Drawings Approval [40 h] | 762.34 |
|  | 3 | **Ground Floor level - Shop drawings** |  | 2015-04-05 | 2015-05-20 |  |  |  |  |  |
| SD-CS-B1-282 |  | Preparation & Submittals of SD of Floor Finishes at GF | 30d | 2015-04-05 | 2015-05-09 | SD-CS-B2-282 SS+7d, G-CD-003 | 88d | 0d | Shop Drawings Submittals [60 h] |  |
| SD-CS-B1-292 |  | Review & Approval of SD of Floor Finishes at GF | 30d | 2015-04-16 | 2015-05-20 | SD-CS-B1-282 SS+10d, SD-CS-B1-282 FF+10d | 314d | 163d | Shop Drawings Approval [40 h] |  |
|  | 4 | **Mezzanine Floor level - Shop drawings** |  | 2015-04-13 | 2015-05-28 |  |  |  |  |  |
| SD-CS-GF-282 |  | Preparation & Submittals of SD of Floor Finishes at ML | 30d | 2015-04-13 | 2015-05-17 | SD-CS-B1-282 SS+7d | 88d | 0d | Shop Drawings Submittals [60 h] |  |
| SD-CS-GF-292 |  | Review & Approval of SD of Floor Finishes at ML | 30d | 2015-04-25 | 2015-05-28 | SD-CS-GF-282 SS+10d, SD-CS-GF-282 FF+10d | 307d | 221d | Shop Drawings Approval [40 h] |  |
|  | 5 | **Level 1 Floor - Shop drawings** |  | 2015-04-21 | 2015-06-06 |  |  |  |  |  |
| SD-CS-L1-302 |  | Preparation & Submittals of SD of Floor Finishes at L1 | 30d | 2015-04-21 | 2015-05-25 | SD-CS-GF-282 SS+7d | 314d | 0d | Shop Drawings Submittals [60 h] |  |
| SD-CS-L1-312 |  | Review & Approval of SD of Floor Finishes at L1 | 30d | 2015-05-03 | 2015-06-06 | SD-CS-L1-302 SS+10d, SD-CS-L1-302 FF+7d | 314d | 149d | Shop Drawings Approval [40 h] |  |
|  | 6 | **Level 2 Floor - Shop drawings** |  | 2015-04-21 | 2015-06-06 |  |  |  |  |  |
| SD-CS-L2-322 |  | Preparation & Submittals of SD of Floor Finishes at L2 | 30d | 2015-04-21 | 2015-05-25 | SD-CS-GF-282 SS+7d | 88d | 0d | Shop Drawings Submittals [60 h] |  |
| SD-CS-L2-332 |  | Review & Approval of SD of Floor Finishes at L2 | 30d | 2015-05-03 | 2015-06-06 | SD-CS-L2-322 SS+10d, SD-CS-L2-322 FF+10d | 338d | 149d | Shop Drawings Approval [40 h] |  |
|  | 7 | **Level 3 Floor - Shop drawings** |  | 2015-04-29 | 2015-06-14 |  |  |  |  |  |
| SD-CS-L3-342 |  | Preparation & Submittals of SD ofFloor Finishes at L3 | 30d | 2015-04-29 | 2015-06-02 | SD-CS-L2-322 SS+7d | 88d | 0d | Shop Drawings Submittals [60 h] |  |
| SD-CS-L3-352 |  | Review & Approval of SD of Floor Finishes at L3 | 30d | 2015-05-11 | 2015-06-14 | SD-CS-L3-342 SS+10d, SD-CS-L3-342 FF+10d | 281d | 170d | Shop Drawings Approval [40 h] |  |

Notes:
- SD-CS-B3-402: Expenses: FF 762.34
- SD-CS-B3-412: Expenses: FF 762.34
- SD-CS-B3-382: Expenses: FF 762.34
- SD-CS-B3-392: Expenses: FF 762.34
- SD-CS-B2-282: Expenses: FF 762.34
- SD-CS-B2-292: Expenses: FF 762.34

| ID | WBS | Activity | Duration | Start | Finish | Predecessors | Total float | Free float | Resources |
| --- | --- | --- | --- | --- | --- | --- | --- | --- | --- |
|  | 8 | **Level 4 Floor - Shop drawings** |  | 2015-05-07 | 2015-06-22 |  |  |  |  |
| SD-CS-L4-1362 |  | Preparation & Submittals of SD of Floor Finishes at L4 | 30d | 2015-05-07 | 2015-06-10 | SD-CS-L3-342 SS+7d | 88d | 0d | Shop Drawings Submittals [60 h] |
| SD-CS-L4-1372 |  | Review & Approval of SD of Floor Finishes at L4 | 30d | 2015-05-19 | 2015-06-22 | SD-CS-L4-1362 SS+10d, SD-CS-L4-1362 FF+10d | 356d | 180d | Shop Drawings Approval [40 h] |
|  | 9 | **Level 5 Floor - Shop drawings** |  | 2015-05-16 | 2015-06-30 |  |  |  |  |
| SD-CS-L5-382 |  | Preparation & Submittals of SD of Floor Finishes at L5 | 30d | 2015-05-16 | 2015-06-18 | SD-CS-L4-1362 SS+7d | 88d | 0d | Shop Drawings Submittals [60 h] |
| SD-CS-L5-392 |  | Review & Approval of SD of Floor Finishes at L5 | 30d | 2015-05-27 | 2015-06-30 | SD-CS-L5-382 SS+10d, SD-CS-L5-382 FF+10d | 292d | 174d | Shop Drawings Approval [40 h] |
|  | 10 | **Level 6 Floor - Shop drawings** |  | 2015-05-24 | 2015-07-08 |  |  |  |  |
| SD-CS-L6-402 |  | Preparation & Submittals of SD of Floor Finishes at L6 | 30d | 2015-05-24 | 2015-06-27 | SD-CS-L5-382 SS+7d | 88d | 0d | Shop Drawings Submittals [60 h] |
| SD-CS-L6-412 |  | Review & Approval of SD of Floor Finishes at L6 | 30d | 2015-06-04 | 2015-07-08 | SD-CS-L6-402 SS+10d, SD-CS-L6-402 FF+10d | 352d | 162d | Shop Drawings Approval [40 h] |
|  | 11 | **Level 7 Floor - Shop drawings** |  | 2015-06-01 | 2015-07-19 |  |  |  |  |
| SD-CS-L7-422 |  | Preparation & Submittals of SD of Floor Finishes at L7 | 30d | 2015-06-01 | 2015-07-05 | SD-CS-L6-402 SS+7d | 88d | 0d | Shop Drawings Submittals [60 h] |
| SD-CS-L7-432 |  | Review & Approval of SD of Floor Finishes at L7 | 30d | 2015-06-13 | 2015-07-19 | SD-CS-L7-422 SS+10d, SD-CS-L7-422 FF+10d | 339d | 174d | Shop Drawings Approval [40 h] |
|  | 12 | **Level 8 Floor - Shop drawings** |  | 2015-06-09 | 2015-07-27 |  |  |  |  |
| SD-CS-L8-442 |  | Preparation & Submittals of SD of Floor Finishes at L8 | 30d | 2015-06-09 | 2015-07-13 | SD-CS-L7-422 SS+7d | 88d | 0d | Shop Drawings Submittals [60 h] |
| SD-CS-L8-452 |  | Review & Approval of SD of Floor Finishes at L8 | 30d | 2015-06-21 | 2015-07-27 | SD-CS-L8-442 SS+10d, SD-CS-L8-442 FF+10d | 331d | 187d | Shop Drawings Approval [40 h] |
|  | 13 | **Level 9 Floor - Shop drawings** |  | 2015-06-17 | 2015-08-04 |  |  |  |  |
| SD-CS-L9-462 |  | Preparation & Submittals of SD of Floor Finishes at L9 | 30d | 2015-06-17 | 2015-07-23 | SD-CS-L8-442 SS+7d | 88d | 0d | Shop Drawings Submittals [60 h] |
| SD-CS-L9-472 |  | Review & Approval of SD of Floor Finishes at L9 | 30d | 2015-06-29 | 2015-08-04 | SD-CS-L9-462 SS+10d, SD-CS-L9-462 FF+10d | 264d | 180d | Shop Drawings Approval [40 h] |
|  | 14 | **Level 10 Floor - Shop drawings** |  | 2015-06-25 | 2015-08-12 |  |  |  |  |
| SD-CS-L10-482 |  | Preparation & Submittals of SD of Floor Finishes at L10 | 30d | 2015-06-25 | 2015-08-01 | SD-CS-L9-462 SS+7d | 88d | 0d | Shop Drawings Submittals [60 h] |
| SD-CS-L10-492 |  | Review & Approval of SD of Floor Finishes at L10 | 30d | 2015-07-07 | 2015-08-12 | SD-CS-L10-482 SS+10d, SD-CS-L10-482 FF+10d | 282d | 173d | Shop Drawings Approval [40 h] |
|  | 15 | **Level 11 Floor - Shop drawings** |  | 2015-07-04 | 2015-08-20 |  |  |  |  |
| SD-CS-L11-502 |  | Preparation & Submittals of SD of Floor Finishes at L11 | 30d | 2015-07-04 | 2015-08-09 | SD-CS-L10-482 SS+7d | 88d | 0d | Shop Drawings Submittals [60 h] |
| SD-CS-L11-512 |  | Review & Approval of SD of Floor Finishes at L11 | 30d | 2015-07-18 | 2015-08-20 | SD-CS-L11-502 SS+10d, SD-CS-L11-502 FF+10d | 275d | 166d | Shop Drawings Approval [40 h] |

| ID | WBS | Activity | Duration | Start | Finish | Predecessors | Total float | Free float | Resources |
| --- | --- | --- | --- | --- | --- | --- | --- | --- | --- |
|  | 16 | **Level 12 Floor - Shop drawings** |  | 2015-07-12 | 2015-08-29 |  |  |  |  |
| SD-CS-L12-522 |  | Preparation & Submittals of SD of Floor Finishes at L12 | 30d | 2015-07-12 | 2015-08-17 | SD-CS-L11-502 SS+7d | 88d | 0d | Shop Drawings Submittals [60 h] |
| SD-CS-L12-532 |  | Review & Approval of SD of Floor Finishes at L12 | 30d | 2015-07-26 | 2015-08-29 | SD-CS-L12-522 SS+10d, SD-CS-L12-522 FF+10d | 293d | 179d | Shop Drawings Approval [40 h] |
|  | 17 | **Level 13 Floor - Shop drawings** |  | 2015-07-22 | 2015-09-06 |  |  |  |  |
| SD-CS-L13-542 |  | Preparation & Submittals of SD of Floor Finishes at L13 | 30d | 2015-07-22 | 2015-08-25 | SD-CS-L12-522 SS+7d | 88d | 0d | Shop Drawings Submittals [60 h] |
| SD-CS-L13-552 |  | Review & Approval of SD of Floor Finishes at L13 | 30d | 2015-08-03 | 2015-09-06 | SD-CS-L13-542 SS+10d, SD-CS-L13-542 FF+10d | 286d | 172d | Shop Drawings Approval [40 h] |
|  | 18 | **Level 14 Floor - Shop drawings** |  | 2015-07-30 | 2015-09-14 |  |  |  |  |
| SD-CS-L14-562 |  | Preparation & Submittals of SD of Floor Finishes at L14 | 30d | 2015-07-30 | 2015-09-02 | SD-CS-L13-542 SS+7d | 88d | 0d | Shop Drawings Submittals [60 h] |
| SD-CS-L14-572 |  | Review & Approval of SD of Floor Finishes at L14 | 30d | 2015-08-11 | 2015-09-14 | SD-CS-L14-562 SS+10d, SD-CS-L14-562 FF+10d | 300d | 165d | Shop Drawings Approval [40 h] |
|  | 19 | **Level 15 Floor - Shop drawings** |  | 2015-08-08 | 2015-09-26 |  |  |  |  |
| SD-CS-L15-582 |  | Preparation & Submittals of SD of Floor Finishes at L15 | 30d | 2015-08-08 | 2015-09-10 | SD-CS-L14-562 SS+7d | 88d | 0d | Shop Drawings Submittals [60 h] |
| SD-CS-L15-592 |  | Review & Approval of SD of Floor Finishes at L15 | 30d | 2015-08-19 | 2015-09-26 | SD-CS-L15-582 SS+10d, SD-CS-L15-582 FF+10d | 293d | 158d | Shop Drawings Approval [40 h] |
|  | 20 | **Level 16 Floor - Shop drawings** |  | 2015-08-16 | 2015-10-04 |  |  |  |  |
| SD-CS-L16-602 |  | Preparation & Submittals of SD of Floor Finishes at L16 | 30d | 2015-08-16 | 2015-09-19 | SD-CS-L15-582 SS+7d | 88d | 0d | Shop Drawings Submittals [60 h] |
| SD-CS-L16-612 |  | Review & Approval of SD of Floor Finishes at L16 | 30d | 2015-08-27 | 2015-10-04 | SD-CS-L16-602 SS+10d, SD-CS-L16-602 FF+10d | 286d | 151d | Shop Drawings Approval [40 h] |
|  | 21 | **Level 17 Floor - Shop drawings** |  | 2015-08-24 | 2015-10-12 |  |  |  |  |
| SD-CS-L17-1382 |  | Preparation & Submittals of SD of Floor Finishes at L17 | 30d | 2015-08-24 | 2015-09-30 | SD-CS-L16-602 SS+7d | 88d | 0d | Shop Drawings Submittals [60 h] |
| SD-CS-L17-1392 |  | Review & Approval of SD of Floor Finishes at L17 | 30d | 2015-09-05 | 2015-10-12 | SD-CS-L17-1382 SS+10d, SD-CS-L17-1382 FF+10d | 283d | 144d | Shop Drawings Approval [40 h] |
|  | 22 | **Level 18 Floor - Shop drawings** |  | 2015-09-01 | 2015-10-20 |  |  |  |  |
| SD-CS-L18-642 |  | Preparation & Submittals of SD of Floor Finishes at L18 | 30d | 2015-09-01 | 2015-10-08 | SD-CS-L17-1382 SS+7d | 88d | 0d | Shop Drawings Submittals [60 h] |
| SD-CS-L18-652 |  | Review & Approval of SD of Floor Finishes at L18 | 30d | 2015-09-13 | 2015-10-20 | SD-CS-L18-642 SS+10d, SD-CS-L18-642 FF+10d | 276d | 137d | Shop Drawings Approval [40 h] |
|  | 23 | **Level 19 Floor - Shop drawings** |  | 2015-09-09 | 2015-10-28 |  |  |  |  |
| SD-CS-L19-662 |  | Preparation & Submittals of SD of Floor Finishes at L19 | 30d | 2015-09-09 | 2015-10-17 | SD-CS-L18-642 SS+7d | 88d | 0d | Shop Drawings Submittals [60 h] |
| SD-CS-L19-672 |  | Review & Approval of SD of Floor Finishes at L19 | 30d | 2015-09-24 | 2015-10-28 | SD-CS-L19-662 SS+10d, SD-CS-L19-662 FF+10d | 269d | 134d | Shop Drawings Approval [40 h] |

| ID | WBS | Activity | Duration | Start | Finish | Predecessors | Total float | Free float | Resources |
| --- | --- | --- | --- | --- | --- | --- | --- | --- | --- |
|  | 24 | **Level 20 Floor - Shop drawings** |  | 2015-09-17 | 2015-11-02 |  |  |  |  |
| SD-CS-L20-682 |  | Preparation & Submittals of SD of Floor Finishes at L20 | 30d | 2015-09-17 | 2015-10-25 | SD-CS-L19-662 SS+7d | 88d | 0d | Shop Drawings Submittals [60 h] |
| SD-CS-L20-692 |  | Review & Approval of SD of Floor Finishes at L20 | 30d | 2015-09-29 | 2015-11-02 | SD-CS-L20-682 SS+7d, SD-CS-L20-682 FF+7d | 265d | 146d | Shop Drawings Approval [40 h] |
|  | 25 | **Level 21 Floor - Shop drawings** |  | 2015-09-29 | 2015-11-10 |  |  |  |  |
| SD-CS-L21-702 |  | Preparation & Submittals of SD of Floor Finishes at L21 | 30d | 2015-09-29 | 2015-11-02 | SD-CS-L20-682 SS+7d | 88d | 0d | Shop Drawings Submittals [60 h] |
| SD-CS-L21-712 |  | Review & Approval of SD of Floor Finishes at L21 | 30d | 2015-10-07 | 2015-11-10 | SD-CS-L21-702 SS+7d, SD-CS-L21-702 FF+7d | 258d | 139d | Shop Drawings Approval [40 h] |
|  | 26 | **Level 22 Floor - Shop drawings** |  | 2015-10-07 | 2015-11-22 |  |  |  |  |
| SD-CS-L22-722 |  | Preparation & Submittals of SD of Floor Finishes at L22 | 30d | 2015-10-07 | 2015-11-10 | SD-CS-L21-702 SS+7d | 88d | 0d | Shop Drawings Submittals [60 h] |
| SD-CS-L22-732 |  | Review & Approval of SD of Floor Finishes at L22 | 30d | 2015-10-19 | 2015-11-22 | SD-CS-L22-722 SS+10d, SD-CS-L22-722 FF+10d | 244d | 136d | Shop Drawings Approval [40 h] |
|  | 27 | **Level 23 Floor - Shop drawings** |  | 2015-10-15 | 2015-11-30 |  |  |  |  |
| SD-CS-L23-742 |  | Preparation & Submittals of SD of Floor Finishes at L23 | 30d | 2015-10-15 | 2015-11-18 | SD-CS-L22-722 SS+7d | 88d | 0d | Shop Drawings Submittals [60 h] |
| SD-CS-L23-752 |  | Review & Approval of SD of Floor Finishes at L23 | 30d | 2015-10-27 | 2015-11-30 | SD-CS-L23-742 SS+10d, SD-CS-L23-742 FF+10d | 237d | 137d | Shop Drawings Approval [40 h] |
|  | 28 | **Level 24 Floor - Shop drawings** |  | 2015-10-24 | 2015-12-08 |  |  |  |  |
| SD-CS-L24-762 |  | Preparation & Submittals of SD of Floor Finishes at L24 | 30d | 2015-10-24 | 2015-11-26 | SD-CS-L23-742 SS+7d | 88d | 0d | Shop Drawings Submittals [60 h] |
| SD-CS-L24-772 |  | Review & Approval of SD of Floor Finishes at L24 | 30d | 2015-11-04 | 2015-12-08 | SD-CS-L24-762 SS+10d, SD-CS-L24-762 FF+10d | 230d | 130d | Shop Drawings Approval [40 h] |
|  | 29 | **Level 25 Floor - Shop drawings** |  | 2015-11-01 | 2015-12-16 |  |  |  |  |
| SD-CS-L25-782 |  | Preparation & Submittals of SD of Floor Finishes at L25 | 30d | 2015-11-01 | 2015-12-05 | SD-CS-L24-762 SS+7d | 88d | 0d | Shop Drawings Submittals [60 h] |
| SD-CS-L25-792 |  | Review & Approval of SD of Floor Finishes at L25 | 30d | 2015-11-12 | 2015-12-16 | SD-CS-L25-782 SS+10d, SD-CS-L25-782 FF+10d | 223d | 123d | Shop Drawings Approval [40 h] |
|  | 30 | **Level 26 Floor - Shop drawings** |  | 2015-11-09 | 2015-12-26 |  |  |  |  |
| SD-CS-L26-802 |  | Preparation & Submittals of SD of Floor Finishes at L26 | 30d | 2015-11-09 | 2015-12-13 | SD-CS-L25-782 SS+7d | 88d | 0d | Shop Drawings Submittals [60 h] |
| SD-CS-L26-812 |  | Review & Approval of SD of Floor Finishes at L26 | 30d | 2015-11-21 | 2015-12-26 | SD-CS-L26-802 SS+10d, SD-CS-L26-802 FF+10d | 216d | 116d | Shop Drawings Approval [40 h] |
|  | 31 | **Level 27 Floor - Shop drawings** |  | 2015-11-17 | 2016-01-03 |  |  |  |  |
| SD-CS-L27-822 |  | Preparation & Submittals of SD of Floor Finishes at L27 | 30d | 2015-11-17 | 2015-12-22 | SD-CS-L26-802 SS+7d | 88d | 0d | Shop Drawings Submittals [60 h] |
| SD-CS-L27-832 |  | Review & Approval of SD of Floor Finishes at L27 | 30d | 2015-11-29 | 2016-01-03 | SD-CS-L27-822 SS+10d, SD-CS-L27-822 FF+10d | 209d | 109d | Shop Drawings Approval [40 h] |

| ID | WBS | Activity | Duration | Start | Finish | Predecessors | Total float | Free float | Resources |
| --- | --- | --- | --- | --- | --- | --- | --- | --- | --- |
|  | 32 | **Level 28 Floor - Shop drawings** |  | 2015-11-25 | 2016-01-11 |  |  |  |  |
| SD-CS-L28-842 |  | Preparation & Submittals of SD of Floor Finishes at L28 | 30d | 2015-11-25 | 2015-12-30 | SD-CS-L27-822 SS+7d | 88d | 0d | Shop Drawings Submittals [60 h] |
| SD-CS-L28-852 |  | Review & Approval of SD of Floor Finishes at L28 | 30d | 2015-12-07 | 2016-01-11 | SD-CS-L28-842 SS+10d, SD-CS-L28-842 FF+10d | 202d | 107d | Shop Drawings Approval [40 h] |
|  | 33 | **Level 29 Floor - Shop drawings** |  | 2015-12-03 | 2016-01-19 |  |  |  |  |
| SD-CS-L29-862 |  | Preparation & Submittals of SD of Floor Finishes at L29 | 30d | 2015-12-03 | 2016-01-07 | SD-CS-L28-842 SS+7d | 88d | 0d | Shop Drawings Submittals [60 h] |
| SD-CS-L29-872 |  | Review & Approval of SD of Floor Finishes at L29 | 30d | 2015-12-15 | 2016-01-19 | SD-CS-L29-862 SS+10d, SD-CS-L29-862 FF+10d | 195d | 105d | Shop Drawings Approval [40 h] |
|  | 34 | **Level 30 Floor - Shop drawings** |  | 2015-12-12 | 2016-01-27 |  |  |  |  |
| SD-CS-L30-882 |  | Preparation & Submittals of SD of Floor Finishes at L30 | 30d | 2015-12-12 | 2016-01-16 | SD-CS-L29-862 SS+7d | 88d | 0d | Shop Drawings Submittals [60 h] |
| SD-CS-L30-892 |  | Review & Approval of SD of Floor Finishes at L30 | 30d | 2015-12-24 | 2016-01-27 | SD-CS-L30-882 SS+10d, SD-CS-L30-882 FF+10d | 198d | 118d | Shop Drawings Approval [40 h] |
|  | 35 | **Level 31 Floor - Shop drawings** |  | 2015-12-21 | 2016-02-04 |  |  |  |  |
| SD-CS-L31-902 |  | Preparation & Submittals of SD of Floor Finishes at L31 | 30d | 2015-12-21 | 2016-01-24 | SD-CS-L30-882 SS+7d | 88d | 0d | Shop Drawings Submittals [60 h] |
| SD-CS-L31-912 |  | Review & Approval of SD of Floor Finishes at L31 | 30d | 2016-01-02 | 2016-02-04 | SD-CS-L31-902 SS+10d, SD-CS-L31-902 FF+10d | 191d | 123d | Shop Drawings Approval [40 h] |
|  | 36 | **Level 32 Floor - Shop drawings** |  | 2015-12-29 | 2016-02-14 |  |  |  |  |
| SD-CS-L32-922 |  | Preparation & Submittals of SD of Floor Finishes at L32 | 30d | 2015-12-29 | 2016-02-01 | SD-CS-L31-902 SS+7d | 88d | 0d | Shop Drawings Submittals [60 h] |
| SD-CS-L32-932 |  | Review & Approval of SD of Floor Finishes at L32 | 30d | 2016-01-10 | 2016-02-14 | SD-CS-L32-922 SS+10d, SD-CS-L32-922 FF+10d | 184d | 117d | Shop Drawings Approval [40 h] |
|  | 37 | **Level 33 Floor - Shop drawings** |  | 2016-01-06 | 2016-02-22 |  |  |  |  |
| SD-CS-L33-942 |  | Preparation & Submittals of SD of Floor Finishes at L33 | 30d | 2016-01-06 | 2016-02-09 | SD-CS-L32-922 SS+7d | 88d | 0d | Shop Drawings Submittals [60 h] |
| SD-CS-L33-952 |  | Review & Approval of SD of Floor Finishes at L33 | 30d | 2016-01-18 | 2016-02-22 | SD-CS-L33-942 SS+10d, SD-CS-L33-942 FF+10d | 162d | 116d | Shop Drawings Approval [40 h] |
|  | 38 | **Level 34 Floor - Shop drawings** |  | 2016-01-14 | 2016-03-01 |  |  |  |  |
| SD-CS-L34-962 |  | Preparation & Submittals of SD of Floor Finishes at L34 | 30d | 2016-01-14 | 2016-02-18 | SD-CS-L33-942 SS+7d | 88d | 0d | Shop Drawings Submittals [60 h] |
| SD-CS-L34-972 |  | Review & Approval of SD of Floor Finishes at L34 | 30d | 2016-01-26 | 2016-03-01 | SD-CS-L34-962 SS+10d, SD-CS-L34-962 FF+10d | 170d | 115d | Shop Drawings Approval [40 h] |
|  | 39 | **Level 35 Floor - Shop drawings** |  | 2016-01-23 | 2016-03-09 |  |  |  |  |
| SD-CS-L35-982 |  | Preparation & Submittals of SD of Floor Finishes at L35 | 30d | 2016-01-23 | 2016-02-27 | SD-CS-L34-962 SS+7d | 88d | 0d | Shop Drawings Submittals [60 h] |
| SD-CS-L35-992 |  | Review & Approval of SD of Floor Finishes at L35 | 30d | 2016-02-03 | 2016-03-09 | SD-CS-L35-982 SS+10d, SD-CS-L35-982 FF+10d | 163d | 122d | Shop Drawings Approval [40 h] |

| ID | WBS | Activity | Duration | Start | Finish | Predecessors | Total float | Free float | Resources |
| --- | --- | --- | --- | --- | --- | --- | --- | --- | --- |
|  | 40 | **Level 36 Floor - Shop drawings** |  | 2016-01-31 | 2016-03-17 |  |  |  |  |
| SD-CS-L36-1002 |  | Preparation & Submittals of SD of Floor Finishes at L36 | 30d | 2016-01-31 | 2016-03-06 | SD-CS-L35-982 SS+7d | 88d | 0d | Shop Drawings Submittals [60 h] |
| SD-CS-L36-1012 |  | Review & Approval of SD of Floor Finishes at L36 | 30d | 2016-02-13 | 2016-03-17 | SD-CS-L36-1002 SS+10d, SD-CS-L36-1002 FF+10d | 156d | 115d | Shop Drawings Approval [40 h] |
|  | 41 | **Level 37 Floor - Shop drawings** |  | 2016-02-08 | 2016-03-26 |  |  |  |  |
| SD-CS-L37-1022 |  | Preparation & Submittals of SD of Floor Finishes at L37 | 30d | 2016-02-08 | 2016-03-14 | SD-CS-L36-1002 SS+7d | 88d | 0d | Shop Drawings Submittals [60 h] |
| SD-CS-L37-1032 |  | Review & Approval of SD of Floor Finishes at L37 | 30d | 2016-02-21 | 2016-03-26 | SD-CS-L37-1022 SS+10d, SD-CS-L37-1022 FF+10d | 169d | 112d | Shop Drawings Approval [40 h] |
|  | 42 | **Level 38 Floor - Shop drawings** |  | 2016-02-17 | 2016-04-03 |  |  |  |  |
| SD-CS-L38-1042 |  | Preparation & Submittals of SD of Floor Finishes at L38 | 30d | 2016-02-17 | 2016-03-22 | SD-CS-L37-1022 SS+7d | 88d | 0d | Shop Drawings Submittals [60 h] |
| SD-CS-L38-1052 |  | Review & Approval of SD of Floor Finishes at L38 | 30d | 2016-02-29 | 2016-04-03 | SD-CS-L38-1042 SS+10d, SD-CS-L38-1042 FF+10d | 162d | 111d | Shop Drawings Approval [40 h] |
|  | 43 | **Level 39 Floor - Shop drawings** |  | 2016-02-25 | 2016-04-11 |  |  |  |  |
| SD-CS-L39-1062 |  | Preparation & Submittals of SD of Floor Finishes at L39 | 30d | 2016-02-25 | 2016-03-30 | SD-CS-L38-1042 SS+7d | 88d | 0d | Shop Drawings Submittals [60 h] |
| SD-CS-L39-1072 |  | Review & Approval of SD of Floor Finishes at L39 | 30d | 2016-03-08 | 2016-04-11 | SD-CS-L39-1062 SS+10d, SD-CS-L39-1062 FF+10d | 157d | 118d | Shop Drawings Approval [40 h] |
|  | 44 | **Level 40 Floor - Shop drawings** |  | 2016-03-05 | 2016-04-19 |  |  |  |  |
| SD-CS-L40-1082 |  | Preparation & Submittals of SD of Floor Finishes at L40 | 30d | 2016-03-05 | 2016-04-07 | SD-CS-L39-1062 SS+7d | 88d | 0d | Shop Drawings Submittals [60 h] |
| SD-CS-L40-1092 |  | Review & Approval of SD of Floor Finishes at L40 | 30d | 2016-03-16 | 2016-04-19 | SD-CS-L40-1082 SS+10d, SD-CS-L40-1082 FF+10d | 128d | 86d | Shop Drawings Approval [40 h] |
|  | 45 | **Level 41 Floor - Shop drawings** |  | 2016-03-13 | 2016-04-27 |  |  |  |  |
| SD-CS-L41-1102 |  | Preparation & Submittals of SD of Floor Finishes at L41 | 30d | 2016-03-13 | 2016-04-16 | SD-CS-L40-1082 SS+7d | 88d | 0d | Shop Drawings Submittals [60 h] |
| SD-CS-L41-1112 |  | Review & Approval of SD of Floor Finishes at L41 | 30d | 2016-03-24 | 2016-04-27 | SD-CS-L41-1102 SS+10d, SD-CS-L41-1102 FF+10d | 121d | 83d | Shop Drawings Approval [40 h] |
|  | 46 | **Level 42 Floor - Shop drawings** |  | 2016-03-21 | 2016-05-05 |  |  |  |  |
| SD-CS-L42-1122 |  | Preparation & Submittals of SD of Floor Finishes at L42 | 30d | 2016-03-21 | 2016-04-24 | SD-CS-L41-1102 SS+7d | 88d | 0d | Shop Drawings Submittals [60 h] |
| SD-CS-L42-1132 |  | Review & Approval of SD of Floor Finishes at L42 | 30d | 2016-04-02 | 2016-05-05 | SD-CS-L42-1122 SS+10d, SD-CS-L42-1122 FF+10d | 109d | 90d | Shop Drawings Approval [40 h] |
|  | 47 | **Level 43 Floor - Shop drawings** |  | 2016-03-29 | 2016-05-14 |  |  |  |  |
| SD-CS-L43-1142 |  | Preparation & Submittals of SD of Floor Finishes at L43 | 30d | 2016-03-29 | 2016-05-02 | SD-CS-L42-1122 SS+7d | 88d | 0d | Shop Drawings Submittals [60 h] |
| SD-CS-L43-1152 |  | Review & Approval of SD of Floor Finishes at L43 | 30d | 2016-04-10 | 2016-05-14 | SD-CS-L43-1142 SS+10d, SD-CS-L43-1142 FF+10d | 102d | 83d | Shop Drawings Approval [40 h] |

| ID | WBS | Activity | Duration | Start | Finish | Predecessors | Total float | Free float | Resources |
| --- | --- | --- | --- | --- | --- | --- | --- | --- | --- |
|  | 48 | **Level 44 Floor - Shop drawings** |  | 2016-04-06 | 2016-05-22 |  |  |  |  |
| SD-CS-L44-1162 |  | Preparation & Submittals of SD of Floor Finishes at L44 | 30d | 2016-04-06 | 2016-05-10 | SD-CS-L43-1142 SS+7d | 88d | 0d | Shop Drawings Submittals [60 h] |
| SD-CS-L44-1172 |  | Review & Approval of SD of Floor Finishes at L44 | 30d | 2016-04-18 | 2016-05-22 | SD-CS-L44-1162 SS+10d, SD-CS-L44-1162 FF+10d | 115d | 80d | Shop Drawings Approval [40 h] |
|  | 49 | **Level 45 Floor - Shop drawings** |  | 2016-04-14 | 2016-05-30 |  |  |  |  |
| SD-CS-L45-1182 |  | Preparation & Submittals of SD of Floor Finishes at L45 | 30d | 2016-04-14 | 2016-05-18 | SD-CS-L44-1162 SS+7d | 88d | 0d | Shop Drawings Submittals [60 h] |
| SD-CS-L45-1192 |  | Review & Approval of SD of Floor Finishes at L45 | 30d | 2016-04-26 | 2016-05-30 | SD-CS-L45-1182 SS+10d, SD-CS-L45-1182 FF+10d | 108d | 86d | Shop Drawings Approval [40 h] |
|  | 50 | **Level 46 Floor - Shop drawings** |  | 2016-04-23 | 2016-06-07 |  |  |  |  |
| SD-CS-L46-1202 |  | Preparation & Submittals of SD of Floor Finishes at L46 | 30d | 2016-04-23 | 2016-05-26 | SD-CS-L45-1182 SS+7d | 88d | 0d | Shop Drawings Submittals [60 h] |
| SD-CS-L46-1212 |  | Review & Approval of SD of Floor Finishes at L46 | 30d | 2016-05-04 | 2016-06-07 | SD-CS-L46-1202 SS+10d, SD-CS-L46-1202 FF+10d | 101d | 80d | Shop Drawings Approval [40 h] |
|  | 53 | **Level 47 Floor - Shop drawings** |  | 2016-05-01 | 2016-06-15 |  |  |  |  |
| SD-CS-L47-1222 |  | Preparation & Submittals of SD of Floor Finishes at L47 | 30d | 2016-05-01 | 2016-06-04 | SD-CS-L46-1202 SS+7d | 88d | 0d | Shop Drawings Submittals [60 h] |
| SD-CS-L47-1232 |  | Review & Approval of SD of Floor Finishes at L47 | 30d | 2016-05-12 | 2016-06-15 | SD-CS-L47-1222 SS+10d, SD-CS-L47-1222 FF+10d | 94d | 77d | Shop Drawings Approval [40 h] |
|  | 51 | **Level 48 Floor - Shop drawings** |  | 2016-05-09 | 2016-06-18 |  |  |  |  |
| SD-CS-L48-1242 |  | Preparation & Submittals of SD of Floor Finishes at L48 | 25d | 2016-05-09 | 2016-06-06 | SD-CS-L47-1222 SS+7d | 88d | 0d | Shop Drawings Submittals [60 h] |
| SD-CS-L48-1252 |  | Review & Approval of SD of Floor Finishes at L48 | 25d | 2016-05-21 | 2016-06-18 | SD-CS-L48-1242 SS+10d, SD-CS-L48-1242 FF+10d | 91d | 69d | Shop Drawings Approval [40 h] |
|  | 52 | **Level 49 Floor - Shop drawings** |  | 2016-05-17 | 2016-07-02 |  |  |  |  |
| SD-CS-L49-1262 |  | Preparation & Submittals of SD of Floor Finishes at L49 | 30d | 2016-05-17 | 2016-06-20 | SD-CS-L48-1242 SS+7d | 88d | 0d | Shop Drawings Submittals [60 h] |
| SD-CS-L49-1272 |  | Review & Approval of SD of Floor Finishes at L49 | 30d | 2016-05-29 | 2016-07-02 | SD-CS-L49-1262 SS+10d, SD-CS-L49-1262 FF+10d | 92d | 74d | Shop Drawings Approval [40 h] |
|  | 54 | **Level 50 Floor - Shop drawings** |  | 2016-05-25 | 2016-07-13 |  |  |  |  |
| SD-CS-L50-1282 |  | Preparation & Submittals of SD of Floor Finishes at L50 | 30d | 2016-05-25 | 2016-06-28 | SD-CS-L49-1262 SS+7d | 88d | 0d | Shop Drawings Submittals [60 h] |
| SD-CS-L50-1292 |  | Review & Approval of SD of Floor Finishes at L50 | 30d | 2016-06-06 | 2016-07-13 | SD-CS-L50-1282 SS+10d, SD-CS-L50-1282 FF+10d | 88d | 75d | Shop Drawings Approval [40 h] |
|  | 55 | **Level 51 Floor - Shop drawings** |  | 2016-05-29 | 2016-07-17 |  |  |  |  |
| SD-CS-L51-1802 |  | Preparation & Submittals of SD of Floor Finishes at L51 | 30d | 2016-05-29 | 2016-07-02 | SD-CS-L50-1282 SS+3d | 90d | 0d | Shop Drawings Submittals [60 h] |
| SD-CS-L51-1812 |  | Review & Approval of SD of Floor Finishes at L51 | 30d | 2016-06-09 | 2016-07-17 | SD-CS-L51-1802 SS+10d, SD-CS-L51-1802 FF+10d | 90d | 71d | Shop Drawings Approval [40 h] |

| ID | WBS | Activity | Duration | Start | Finish | Predecessors | Total float | Free float | Resources | Cost |
| --- | --- | --- | --- | --- | --- | --- | --- | --- | --- | --- |
|  | 4 | **Wall Finishes** |  | 2015-04-09 | 2016-08-28 |  |  |  |  |  |
|  | R | **Basement 3 Floor level - Shop drawings** |  | 2015-04-09 | 2015-05-30 |  |  |  |  |  |
| SD-CS-B3-442 |  | Preparation & Submittals of SD of Wall Finishes at B3 | 30d | 2015-04-09 | 2015-05-13 | PQ-CS-C-872, PQ-CS-C-892, PQ-CS-C-952, PQ-CS-C-992 | 91d | 0d | Shop Drawings Submittals [60 h] | 2,287.02 |
| SD-CS-B3-452 |  | Review & Approval of SD of Wall Finishes at B3 | 30d | 2015-04-26 | 2015-05-30 | SD-CS-B3-442 SS+14d, SD-CS-B3-442 FF+7d | 452d | 309d | Shop Drawings Approval [40 h] | 2,287.02 |
|  | 1 | **Basement 2 Floor level - Shop drawings** |  | 2015-04-26 | 2015-06-10 |  |  |  |  |  |
| SD-CS-B3-422 |  | Preparation & Submittals of SD of Wall Finishes at B2 | 30d | 2015-04-26 | 2015-05-30 | SD-CS-B3-442 SS+14d | 91d | 0d | Shop Drawings Submittals [60 h] | 2,287.02 |
| SD-CS-B3-432 |  | Review & Approval of SD of Wall Finishes at B2 | 30d | 2015-05-07 | 2015-06-10 | SD-CS-B3-422 SS+10d, SD-CS-B3-422 FF+10d | 381d | 329d | Shop Drawings Approval [40 h] | 2,287.02 |
|  | 2 | **Basement 1 Floor level - Shop drawings** |  | 2015-05-04 | 2015-06-18 |  |  |  |  |  |
| SD-CS-B2-302 |  | Preparation & Submittals of SD of Wall Finishes at B1 | 30d | 2015-05-04 | 2015-06-07 | SD-CS-B3-422 SS+7d | 91d | 0d | Shop Drawings Submittals [60 h] | 2,287.02 |
| SD-CS-B2-312 |  | Review & Approval of SD of Wall Finishes at B1 | 30d | 2015-05-16 | 2015-06-18 | SD-CS-B2-302 SS+10d, SD-CS-B2-302 FF+10d | 399d | 342d | Shop Drawings Approval [40 h] | 2,287.02 |
|  | 3 | **Ground Floor level - Shop drawings** |  | 2015-05-12 | 2015-06-27 |  |  |  |  |  |
| SD-CS-B1-302 |  | Preparation & Submittals of SD of Wall Finishes at GF | 30d | 2015-05-12 | 2015-06-15 | SD-CS-B2-302 SS+7d, G-CD-003 | 91d | 0d | Shop Drawings Submittals [60 h] |  |
| SD-CS-B1-312 |  | Review & Approval of SD of Wall Finishes at GF | 30d | 2015-05-24 | 2015-06-27 | SD-CS-B1-302 SS+10d, SD-CS-B1-302 FF+10d | 344d | 156d | Shop Drawings Approval [40 h] |  |
|  | 4 | **Mezzanine Floor level - Shop drawings** |  | 2015-05-20 | 2015-07-05 |  |  |  |  |  |
| SD-CS-GF-302 |  | Preparation & Submittals of SD of Wall Finishes at ML | 30d | 2015-05-20 | 2015-06-23 | SD-CS-B1-302 SS+7d | 91d | 0d | Shop Drawings Submittals [60 h] |  |
| SD-CS-GF-312 |  | Review & Approval of SD of Wall Finishes at ML | 30d | 2015-06-01 | 2015-07-05 | SD-CS-GF-302 SS+10d, SD-CS-GF-302 FF+10d | 337d | 214d | Shop Drawings Approval [40 h] |  |
|  | 5 | **Level 1 Floor - Shop drawings** |  | 2015-05-28 | 2015-07-13 |  |  |  |  |  |
| SD-CS-L1-322 |  | Preparation & Submittals of SD of Wall Finishes at L1 | 30d | 2015-05-28 | 2015-07-01 | SD-CS-GF-302 SS+7d | 344d | 0d | Shop Drawings Submittals [60 h] |  |
| SD-CS-L1-332 |  | Review & Approval of SD of Wall Finishes at L1 | 30d | 2015-06-09 | 2015-07-13 | SD-CS-L1-322 SS+10d, SD-CS-L1-322 FF+10d | 344d | 142d | Shop Drawings Approval [40 h] |  |
|  | 6 | **Level 2 Floor - Shop drawings** |  | 2015-05-28 | 2015-07-13 |  |  |  |  |  |
| SD-CS-L2-342 |  | Preparation & Submittals of SD of Wall Finishes at L2 | 30d | 2015-05-28 | 2015-07-01 | SD-CS-GF-302 SS+7d | 91d | 0d | Shop Drawings Submittals [60 h] |  |
| SD-CS-L2-352 |  | Review & Approval of SD of Wall Finishes at L2 | 30d | 2015-06-09 | 2015-07-13 | SD-CS-L2-342 SS+10d, SD-CS-L2-342 FF+10d | 368d | 142d | Shop Drawings Approval [40 h] |  |
|  | 7 | **Level 3 Floor - Shop drawings** |  | 2015-06-06 | 2015-07-23 |  |  |  |  |  |
| SD-CS-L3-362 |  | Preparation & Submittals of SD ofWall Finishes at L3 | 30d | 2015-06-06 | 2015-07-09 | SD-CS-L2-342 SS+7d | 91d | 0d | Shop Drawings Submittals [60 h] |  |
| SD-CS-L3-372 |  | Review & Approval of SD of Wall Finishes at L3 | 30d | 2015-06-17 | 2015-07-23 | SD-CS-L3-362 SS+10d, SD-CS-L3-362 FF+10d | 371d | 163d | Shop Drawings Approval [40 h] |  |

Notes:
- SD-CS-B3-442: Expenses: WF 2287.02
- SD-CS-B3-452: Expenses: WF 2287.02
- SD-CS-B3-422: Expenses: WF 2287.02
- SD-CS-B3-432: Expenses: WF 2287.02
- SD-CS-B2-302: Expenses: WF 2287.02
- SD-CS-B2-312: Expenses: WF 2287.02

| ID | WBS | Activity | Duration | Start | Finish | Predecessors | Total float | Free float | Resources |
| --- | --- | --- | --- | --- | --- | --- | --- | --- | --- |
|  | 8 | **Level 4 Floor - Shop drawings** |  | 2015-06-14 | 2015-08-01 |  |  |  |  |
| SD-CS-L4-1382 |  | Preparation & Submittals of SD of Wall Finishes at L4 | 30d | 2015-06-14 | 2015-07-20 | SD-CS-L3-362 SS+7d | 91d | 0d | Shop Drawings Submittals [60 h] |
| SD-CS-L4-1392 |  | Review & Approval of SD of Wall Finishes at L4 | 30d | 2015-06-25 | 2015-08-01 | SD-CS-L4-1382 SS+10d, SD-CS-L4-1382 FF+10d | 364d | 173d | Shop Drawings Approval [40 h] |
|  | 9 | **Level 5 Floor - Shop drawings** |  | 2015-06-22 | 2015-08-09 |  |  |  |  |
| SD-CS-L5-402 |  | Preparation & Submittals of SD of Wall Finishes at L5 | 30d | 2015-06-22 | 2015-07-28 | SD-CS-L4-1382 SS+7d | 91d | 0d | Shop Drawings Submittals [60 h] |
| SD-CS-L5-412 |  | Review & Approval of SD of Wall Finishes at L5 | 30d | 2015-07-04 | 2015-08-09 | SD-CS-L5-402 SS+10d, SD-CS-L5-402 FF+10d | 367d | 167d | Shop Drawings Approval [40 h] |
|  | 10 | **Level 6 Floor - Shop drawings** |  | 2015-06-30 | 2015-08-17 |  |  |  |  |
| SD-CS-L6-422 |  | Preparation & Submittals of SD of Wall Finishes at L6 | 30d | 2015-06-30 | 2015-08-05 | SD-CS-L5-402 SS+7d | 91d | 0d | Shop Drawings Submittals [60 h] |
| SD-CS-L6-432 |  | Review & Approval of SD of Wall Finishes at L6 | 30d | 2015-07-12 | 2015-08-17 | SD-CS-L6-422 SS+10d, SD-CS-L6-422 FF+10d | 360d | 155d | Shop Drawings Approval [40 h] |
|  | 11 | **Level 7 Floor - Shop drawings** |  | 2015-07-08 | 2015-08-25 |  |  |  |  |
| SD-CS-L7-442 |  | Preparation & Submittals of SD of Wall Finishes at L7 | 30d | 2015-07-08 | 2015-08-13 | SD-CS-L6-422 SS+7d | 91d | 0d | Shop Drawings Submittals [60 h] |
| SD-CS-L7-452 |  | Review & Approval of SD of Wall Finishes at L7 | 30d | 2015-07-22 | 2015-08-25 | SD-CS-L7-442 SS+10d, SD-CS-L7-442 FF+10d | 353d | 167d | Shop Drawings Approval [40 h] |
|  | 12 | **Level 8 Floor - Shop drawings** |  | 2015-07-19 | 2015-09-02 |  |  |  |  |
| SD-CS-L8-462 |  | Preparation & Submittals of SD of Wall Finishes at L8 | 30d | 2015-07-19 | 2015-08-22 | SD-CS-L7-442 SS+7d | 91d | 0d | Shop Drawings Submittals [60 h] |
| SD-CS-L8-472 |  | Review & Approval of SD of Wall Finishes at L8 | 30d | 2015-07-30 | 2015-09-02 | SD-CS-L8-462 SS+10d, SD-CS-L8-462 FF+10d | 336d | 180d | Shop Drawings Approval [40 h] |
|  | 13 | **Level 9 Floor - Shop drawings** |  | 2015-07-27 | 2015-09-10 |  |  |  |  |
| SD-CS-L9-482 |  | Preparation & Submittals of SD of Wall Finishes at L9 | 30d | 2015-07-27 | 2015-08-30 | SD-CS-L8-462 SS+7d | 91d | 0d | Shop Drawings Submittals [60 h] |
| SD-CS-L9-492 |  | Review & Approval of SD of Wall Finishes at L9 | 30d | 2015-08-08 | 2015-09-10 | SD-CS-L9-482 SS+10d, SD-CS-L9-482 FF+10d | 339d | 173d | Shop Drawings Approval [40 h] |
|  | 14 | **Level 10 Floor - Shop drawings** |  | 2015-08-04 | 2015-09-19 |  |  |  |  |
| SD-CS-L10-502 |  | Preparation & Submittals of SD of Wall Finishes at L10 | 30d | 2015-08-04 | 2015-09-07 | SD-CS-L9-482 SS+7d | 91d | 0d | Shop Drawings Submittals [60 h] |
| SD-CS-L10-512 |  | Review & Approval of SD of Wall Finishes at L10 | 30d | 2015-08-16 | 2015-09-19 | SD-CS-L10-502 SS+10d, SD-CS-L10-502 FF+10d | 342d | 166d | Shop Drawings Approval [40 h] |
|  | 15 | **Level 11 Floor - Shop drawings** |  | 2015-08-12 | 2015-09-30 |  |  |  |  |
| SD-CS-L11-522 |  | Preparation & Submittals of SD of Wall Finishes at L11 | 30d | 2015-08-12 | 2015-09-15 | SD-CS-L10-502 SS+7d | 91d | 0d | Shop Drawings Submittals [60 h] |
| SD-CS-L11-532 |  | Review & Approval of SD of Wall Finishes at L11 | 30d | 2015-08-24 | 2015-09-30 | SD-CS-L11-522 SS+10d, SD-CS-L11-522 FF+10d | 335d | 159d | Shop Drawings Approval [40 h] |

| ID | WBS | Activity | Duration | Start | Finish | Predecessors | Total float | Free float | Resources |
| --- | --- | --- | --- | --- | --- | --- | --- | --- | --- |
|  | 16 | **Level 12 Floor - Shop drawings** |  | 2015-08-20 | 2015-10-08 |  |  |  |  |
| SD-CS-L12-542 |  | Preparation & Submittals of SD of Wall Finishes at L12 | 30d | 2015-08-20 | 2015-09-27 | SD-CS-L11-522 SS+7d | 91d | 0d | Shop Drawings Submittals [60 h] |
| SD-CS-L12-552 |  | Review & Approval of SD of Wall Finishes at L12 | 30d | 2015-09-01 | 2015-10-08 | SD-CS-L12-542 SS+10d, SD-CS-L12-542 FF+10d | 338d | 172d | Shop Drawings Approval [40 h] |
|  | 17 | **Level 13 Floor - Shop drawings** |  | 2015-08-29 | 2015-10-17 |  |  |  |  |
| SD-CS-L13-562 |  | Preparation & Submittals of SD of Wall Finishes at L13 | 30d | 2015-08-29 | 2015-10-05 | SD-CS-L12-542 SS+7d | 91d | 0d | Shop Drawings Submittals [60 h] |
| SD-CS-L13-572 |  | Review & Approval of SD of Wall Finishes at L13 | 30d | 2015-09-09 | 2015-10-17 | SD-CS-L13-562 SS+10d, SD-CS-L13-562 FF+10d | 331d | 165d | Shop Drawings Approval [40 h] |
|  | 18 | **Level 14 Floor - Shop drawings** |  | 2015-09-06 | 2015-10-25 |  |  |  |  |
| SD-CS-L14-582 |  | Preparation & Submittals of SD of Wall Finishes at L14 | 30d | 2015-09-06 | 2015-10-13 | SD-CS-L13-562 SS+7d | 91d | 0d | Shop Drawings Submittals [60 h] |
| SD-CS-L14-592 |  | Review & Approval of SD of Wall Finishes at L14 | 30d | 2015-09-17 | 2015-10-25 | SD-CS-L14-582 SS+10d, SD-CS-L14-582 FF+10d | 324d | 158d | Shop Drawings Approval [40 h] |
|  | 19 | **Level 15 Floor - Shop drawings** |  | 2015-09-14 | 2015-11-02 |  |  |  |  |
| SD-CS-L15-602 |  | Preparation & Submittals of SD of Wall Finishes at L15 | 30d | 2015-09-14 | 2015-10-21 | SD-CS-L14-582 SS+7d | 91d | 0d | Shop Drawings Submittals [60 h] |
| SD-CS-L15-612 |  | Review & Approval of SD of Wall Finishes at L15 | 30d | 2015-09-29 | 2015-11-02 | SD-CS-L15-602 SS+10d, SD-CS-L15-602 FF+10d | 307d | 151d | Shop Drawings Approval [40 h] |
|  | 20 | **Level 16 Floor - Shop drawings** |  | 2015-09-26 | 2015-11-10 |  |  |  |  |
| SD-CS-L16-622 |  | Preparation & Submittals of SD of Wall Finishes at L16 | 30d | 2015-09-26 | 2015-10-29 | SD-CS-L15-602 SS+7d | 91d | 0d | Shop Drawings Submittals [60 h] |
| SD-CS-L16-632 |  | Review & Approval of SD of Wall Finishes at L16 | 30d | 2015-10-07 | 2015-11-10 | SD-CS-L16-622 SS+10d, SD-CS-L16-622 FF+10d | 310d | 144d | Shop Drawings Approval [40 h] |
|  | 21 | **Level 17 Floor - Shop drawings** |  | 2015-10-04 | 2015-11-18 |  |  |  |  |
| SD-CS-L17-1402 |  | Preparation & Submittals of SD of Wall Finishes at L17 | 30d | 2015-10-04 | 2015-11-07 | SD-CS-L16-622 SS+7d | 91d | 0d | Shop Drawings Submittals [60 h] |
| SD-CS-L17-1412 |  | Review & Approval of SD of Wall Finishes at L17 | 30d | 2015-10-15 | 2015-11-18 | SD-CS-L17-1402 SS+10d, SD-CS-L17-1402 FF+10d | 309d | 137d | Shop Drawings Approval [40 h] |
|  | 22 | **Level 18 Floor - Shop drawings** |  | 2015-10-12 | 2015-11-26 |  |  |  |  |
| SD-CS-L18-662 |  | Preparation & Submittals of SD of Wall Finishes at L18 | 30d | 2015-10-12 | 2015-11-15 | SD-CS-L17-1402 SS+7d | 91d | 0d | Shop Drawings Submittals [60 h] |
| SD-CS-L18-672 |  | Review & Approval of SD of Wall Finishes at L18 | 30d | 2015-10-24 | 2015-11-26 | SD-CS-L18-662 SS+10d, SD-CS-L18-662 FF+10d | 302d | 130d | Shop Drawings Approval [40 h] |
|  | 23 | **Level 19 Floor - Shop drawings** |  | 2015-10-20 | 2015-12-05 |  |  |  |  |
| SD-CS-L19-682 |  | Preparation & Submittals of SD of Wall Finishes at L19 | 30d | 2015-10-20 | 2015-11-23 | SD-CS-L18-662 SS+7d | 91d | 0d | Shop Drawings Submittals [60 h] |
| SD-CS-L19-692 |  | Review & Approval of SD of Wall Finishes at L19 | 30d | 2015-11-01 | 2015-12-05 | SD-CS-L19-682 SS+10d, SD-CS-L19-682 FF+10d | 295d | 127d | Shop Drawings Approval [40 h] |

| ID | WBS | Activity | Duration | Start | Finish | Predecessors | Total float | Free float | Resources |
| --- | --- | --- | --- | --- | --- | --- | --- | --- | --- |
|  | 24 | **Level 20 Floor - Shop drawings** |  | 2015-10-28 | 2015-12-13 |  |  |  |  |
| SD-CS-L20-702 |  | Preparation & Submittals of SD of Wall Finishes at L20 | 30d | 2015-10-28 | 2015-12-01 | SD-CS-L19-682 SS+7d | 91d | 0d | Shop Drawings Submittals [60 h] |
| SD-CS-L20-712 |  | Review & Approval of SD of Wall Finishes at L20 | 30d | 2015-11-09 | 2015-12-13 | SD-CS-L20-702 SS+10d, SD-CS-L20-702 FF+10d | 288d | 136d | Shop Drawings Approval [40 h] |
|  | 25 | **Level 21 Floor - Shop drawings** |  | 2015-11-05 | 2015-12-22 |  |  |  |  |
| SD-CS-L21-722 |  | Preparation & Submittals of SD of Wall Finishes at L21 | 30d | 2015-11-05 | 2015-12-09 | SD-CS-L20-702 SS+7d | 91d | 0d | Shop Drawings Submittals [60 h] |
| SD-CS-L21-732 |  | Review & Approval of SD of Wall Finishes at L21 | 30d | 2015-11-17 | 2015-12-22 | SD-CS-L21-722 SS+10d, SD-CS-L21-722 FF+10d | 281d | 129d | Shop Drawings Approval [40 h] |
|  | 26 | **Level 22 Floor - Shop drawings** |  | 2015-11-14 | 2015-12-30 |  |  |  |  |
| SD-CS-L22-742 |  | Preparation & Submittals of SD of Wall Finishes at L22 | 30d | 2015-11-14 | 2015-12-17 | SD-CS-L21-722 SS+7d | 91d | 0d | Shop Drawings Submittals [60 h] |
| SD-CS-L22-752 |  | Review & Approval of SD of Wall Finishes at L22 | 30d | 2015-11-25 | 2015-12-30 | SD-CS-L22-742 SS+10d, SD-CS-L22-742 FF+10d | 274d | 129d | Shop Drawings Approval [40 h] |
|  | 27 | **Level 23 Floor - Shop drawings** |  | 2015-11-22 | 2016-01-07 |  |  |  |  |
| SD-CS-L23-762 |  | Preparation & Submittals of SD of Wall Finishes at L23 | 30d | 2015-11-22 | 2015-12-27 | SD-CS-L22-742 SS+7d | 91d | 0d | Shop Drawings Submittals [60 h] |
| SD-CS-L23-772 |  | Review & Approval of SD of Wall Finishes at L23 | 30d | 2015-12-03 | 2016-01-07 | SD-CS-L23-762 SS+10d, SD-CS-L23-762 FF+10d | 267d | 130d | Shop Drawings Approval [40 h] |
|  | 28 | **Level 24 Floor - Shop drawings** |  | 2015-11-30 | 2016-01-16 |  |  |  |  |
| SD-CS-L24-782 |  | Preparation & Submittals of SD of Wall Finishes at L24 | 30d | 2015-11-30 | 2016-01-04 | SD-CS-L23-762 SS+7d | 91d | 0d | Shop Drawings Submittals [60 h] |
| SD-CS-L24-792 |  | Review & Approval of SD of Wall Finishes at L24 | 30d | 2015-12-12 | 2016-01-16 | SD-CS-L24-782 SS+10d, SD-CS-L24-782 FF+10d | 260d | 123d | Shop Drawings Approval [40 h] |
|  | 29 | **Level 25 Floor - Shop drawings** |  | 2015-12-08 | 2016-01-24 |  |  |  |  |
| SD-CS-L25-802 |  | Preparation & Submittals of SD of Wall Finishes at L25 | 30d | 2015-12-08 | 2016-01-12 | SD-CS-L24-782 SS+7d | 91d | 0d | Shop Drawings Submittals [60 h] |
| SD-CS-L25-812 |  | Review & Approval of SD of Wall Finishes at L25 | 30d | 2015-12-21 | 2016-01-24 | SD-CS-L25-802 SS+10d, SD-CS-L25-802 FF+10d | 253d | 116d | Shop Drawings Approval [40 h] |
|  | 30 | **Level 26 Floor - Shop drawings** |  | 2015-12-16 | 2016-02-01 |  |  |  |  |
| SD-CS-L26-822 |  | Preparation & Submittals of SD of Wall Finishes at L26 | 30d | 2015-12-16 | 2016-01-20 | SD-CS-L25-802 SS+7d | 91d | 0d | Shop Drawings Submittals [60 h] |
| SD-CS-L26-832 |  | Review & Approval of SD of Wall Finishes at L26 | 30d | 2015-12-29 | 2016-02-01 | SD-CS-L26-822 SS+10d, SD-CS-L26-822 FF+10d | 246d | 109d | Shop Drawings Approval [40 h] |
|  | 31 | **Level 27 Floor - Shop drawings** |  | 2015-12-26 | 2016-02-09 |  |  |  |  |
| SD-CS-L27-842 |  | Preparation & Submittals of SD of Wall Finishes at L27 | 30d | 2015-12-26 | 2016-01-28 | SD-CS-L26-822 SS+7d | 91d | 0d | Shop Drawings Submittals [60 h] |
| SD-CS-L27-852 |  | Review & Approval of SD of Wall Finishes at L27 | 30d | 2016-01-06 | 2016-02-09 | SD-CS-L27-842 SS+10d, SD-CS-L27-842 FF+10d | 239d | 102d | Shop Drawings Approval [40 h] |

| ID | WBS | Activity | Duration | Start | Finish | Predecessors | Total float | Free float | Resources |
| --- | --- | --- | --- | --- | --- | --- | --- | --- | --- |
|  | 32 | **Level 28 Floor - Shop drawings** |  | 2016-01-03 | 2016-02-18 |  |  |  |  |
| SD-CS-L28-862 |  | Preparation & Submittals of SD of Wall Finishes at L28 | 30d | 2016-01-03 | 2016-02-06 | SD-CS-L27-842 SS+7d | 91d | 0d | Shop Drawings Submittals [60 h] |
| SD-CS-L28-872 |  | Review & Approval of SD of Wall Finishes at L28 | 30d | 2016-01-14 | 2016-02-18 | SD-CS-L28-862 SS+10d, SD-CS-L28-862 FF+10d | 232d | 100d | Shop Drawings Approval [40 h] |
|  | 33 | **Level 29 Floor - Shop drawings** |  | 2016-01-11 | 2016-02-27 |  |  |  |  |
| SD-CS-L29-882 |  | Preparation & Submittals of SD of Wall Finishes at L29 | 30d | 2016-01-11 | 2016-02-15 | SD-CS-L28-862 SS+7d | 91d | 0d | Shop Drawings Submittals [60 h] |
| SD-CS-L29-892 |  | Review & Approval of SD of Wall Finishes at L29 | 30d | 2016-01-23 | 2016-02-27 | SD-CS-L29-882 SS+10d, SD-CS-L29-882 FF+10d | 225d | 101d | Shop Drawings Approval [40 h] |
|  | 34 | **Level 30 Floor - Shop drawings** |  | 2016-01-19 | 2016-03-06 |  |  |  |  |
| SD-CS-L30-902 |  | Preparation & Submittals of SD of Wall Finishes at L30 | 30d | 2016-01-19 | 2016-02-23 | SD-CS-L29-882 SS+7d | 91d | 0d | Shop Drawings Submittals [60 h] |
| SD-CS-L30-912 |  | Review & Approval of SD of Wall Finishes at L30 | 30d | 2016-01-31 | 2016-03-06 | SD-CS-L30-902 SS+10d, SD-CS-L30-902 FF+10d | 218d | 111d | Shop Drawings Approval [40 h] |
|  | 35 | **Level 31 Floor - Shop drawings** |  | 2016-01-27 | 2016-03-14 |  |  |  |  |
| SD-CS-L31-922 |  | Preparation & Submittals of SD of Wall Finishes at L31 | 30d | 2016-01-27 | 2016-03-02 | SD-CS-L30-902 SS+7d | 91d | 0d | Shop Drawings Submittals [60 h] |
| SD-CS-L31-932 |  | Review & Approval of SD of Wall Finishes at L31 | 30d | 2016-02-08 | 2016-03-14 | SD-CS-L31-922 SS+10d, SD-CS-L31-922 FF+10d | 211d | 116d | Shop Drawings Approval [40 h] |
|  | 36 | **Level 32 Floor - Shop drawings** |  | 2016-02-04 | 2016-03-22 |  |  |  |  |
| SD-CS-L32-942 |  | Preparation & Submittals of SD of Wall Finishes at L32 | 30d | 2016-02-04 | 2016-03-10 | SD-CS-L31-922 SS+7d | 91d | 0d | Shop Drawings Submittals [60 h] |
| SD-CS-L32-952 |  | Review & Approval of SD of Wall Finishes at L32 | 30d | 2016-02-17 | 2016-03-22 | SD-CS-L32-942 SS+10d, SD-CS-L32-942 FF+10d | 204d | 110d | Shop Drawings Approval [40 h] |
|  | 37 | **Level 33 Floor - Shop drawings** |  | 2016-02-14 | 2016-03-30 |  |  |  |  |
| SD-CS-L33-962 |  | Preparation & Submittals of SD of Wall Finishes at L33 | 30d | 2016-02-14 | 2016-03-19 | SD-CS-L32-942 SS+7d | 91d | 0d | Shop Drawings Submittals [60 h] |
| SD-CS-L33-972 |  | Review & Approval of SD of Wall Finishes at L33 | 30d | 2016-02-25 | 2016-03-30 | SD-CS-L33-962 SS+10d, SD-CS-L33-962 FF+10d | 197d | 109d | Shop Drawings Approval [40 h] |
|  | 38 | **Level 34 Floor - Shop drawings** |  | 2016-02-22 | 2016-04-07 |  |  |  |  |
| SD-CS-L34-982 |  | Preparation & Submittals of SD of Wall Finishes at L34 | 30d | 2016-02-22 | 2016-03-27 | SD-CS-L33-962 SS+7d | 91d | 0d | Shop Drawings Submittals [60 h] |
| SD-CS-L34-992 |  | Review & Approval of SD of Wall Finishes at L34 | 30d | 2016-03-05 | 2016-04-07 | SD-CS-L34-982 SS+10d, SD-CS-L34-982 FF+10d | 190d | 108d | Shop Drawings Approval [40 h] |
|  | 39 | **Level 35 Floor - Shop drawings** |  | 2016-03-01 | 2016-04-16 |  |  |  |  |
| SD-CS-L35-1002 |  | Preparation & Submittals of SD of Wall Finishes at L35 | 30d | 2016-03-01 | 2016-04-04 | SD-CS-L34-982 SS+7d | 91d | 0d | Shop Drawings Submittals [60 h] |
| SD-CS-L35-1012 |  | Review & Approval of SD of Wall Finishes at L35 | 30d | 2016-03-13 | 2016-04-16 | SD-CS-L35-1002 SS+10d, SD-CS-L35-1002 FF+10d | 183d | 115d | Shop Drawings Approval [40 h] |

| ID | WBS | Activity | Duration | Start | Finish | Predecessors | Total float | Free float | Resources |
| --- | --- | --- | --- | --- | --- | --- | --- | --- | --- |
|  | 40 | **Level 36 Floor - Shop drawings** |  | 2016-03-09 | 2016-04-24 |  |  |  |  |
| SD-CS-L36-1022 |  | Preparation & Submittals of SD of Wall Finishes at L36 | 30d | 2016-03-09 | 2016-04-12 | SD-CS-L35-1002 SS+7d | 91d | 0d | Shop Drawings Submittals [60 h] |
| SD-CS-L36-1032 |  | Review & Approval of SD of Wall Finishes at L36 | 30d | 2016-03-21 | 2016-04-24 | SD-CS-L36-1022 SS+10d, SD-CS-L36-1022 FF+10d | 176d | 108d | Shop Drawings Approval [40 h] |
|  | 41 | **Level 37 Floor - Shop drawings** |  | 2016-03-17 | 2016-05-02 |  |  |  |  |
| SD-CS-L37-1042 |  | Preparation & Submittals of SD of Wall Finishes at L37 | 30d | 2016-03-17 | 2016-04-20 | SD-CS-L36-1022 SS+7d | 91d | 0d | Shop Drawings Submittals [60 h] |
| SD-CS-L37-1052 |  | Review & Approval of SD of Wall Finishes at L37 | 30d | 2016-03-29 | 2016-05-02 | SD-CS-L37-1042 SS+10d, SD-CS-L37-1042 FF+10d | 169d | 105d | Shop Drawings Approval [40 h] |
|  | 42 | **Level 38 Floor - Shop drawings** |  | 2016-03-26 | 2016-05-10 |  |  |  |  |
| SD-CS-L38-1062 |  | Preparation & Submittals of SD of Wall Finishes at L38 | 30d | 2016-03-26 | 2016-04-28 | SD-CS-L37-1042 SS+7d | 91d | 0d | Shop Drawings Submittals [60 h] |
| SD-CS-L38-1072 |  | Review & Approval of SD of Wall Finishes at L38 | 30d | 2016-04-06 | 2016-05-10 | SD-CS-L38-1062 SS+10d, SD-CS-L38-1062 FF+10d | 162d | 104d | Shop Drawings Approval [40 h] |
|  | 43 | **Level 39 Floor - Shop drawings** |  | 2016-04-03 | 2016-05-18 |  |  |  |  |
| SD-CS-L39-1082 |  | Preparation & Submittals of SD of Wall Finishes at L39 | 30d | 2016-04-03 | 2016-05-07 | SD-CS-L38-1062 SS+7d | 91d | 0d | Shop Drawings Submittals [60 h] |
| SD-CS-L39-1092 |  | Review & Approval of SD of Wall Finishes at L39 | 30d | 2016-04-14 | 2016-05-18 | SD-CS-L39-1082 SS+10d, SD-CS-L39-1082 FF+10d | 155d | 111d | Shop Drawings Approval [40 h] |
|  | 44 | **Level 40 Floor - Shop drawings** |  | 2016-04-11 | 2016-05-26 |  |  |  |  |
| SD-CS-L40-1102 |  | Preparation & Submittals of SD of Wall Finishes at L40 | 30d | 2016-04-11 | 2016-05-15 | SD-CS-L39-1082 SS+7d | 91d | 0d | Shop Drawings Submittals [60 h] |
| SD-CS-L40-1112 |  | Review & Approval of SD of Wall Finishes at L40 | 30d | 2016-04-23 | 2016-05-26 | SD-CS-L40-1102 SS+10d, SD-CS-L40-1102 FF+10d | 148d | 79d | Shop Drawings Approval [40 h] |
|  | 45 | **Level 41 Floor - Shop drawings** |  | 2016-04-19 | 2016-06-04 |  |  |  |  |
| SD-CS-L41-1122 |  | Preparation & Submittals of SD of Wall Finishes at L41 | 30d | 2016-04-19 | 2016-05-23 | SD-CS-L40-1102 SS+7d | 91d | 0d | Shop Drawings Submittals [60 h] |
| SD-CS-L41-1132 |  | Review & Approval of SD of Wall Finishes at L41 | 30d | 2016-05-01 | 2016-06-04 | SD-CS-L41-1122 SS+10d, SD-CS-L41-1122 FF+10d | 141d | 76d | Shop Drawings Approval [40 h] |
|  | 46 | **Level 42 Floor - Shop drawings** |  | 2016-04-27 | 2016-06-12 |  |  |  |  |
| SD-CS-L42-1142 |  | Preparation & Submittals of SD of Wall Finishes at L42 | 30d | 2016-04-27 | 2016-05-31 | SD-CS-L41-1122 SS+7d | 91d | 0d | Shop Drawings Submittals [60 h] |
| SD-CS-L42-1152 |  | Review & Approval of SD of Wall Finishes at L42 | 30d | 2016-05-09 | 2016-06-12 | SD-CS-L42-1142 SS+10d, SD-CS-L42-1142 FF+10d | 134d | 83d | Shop Drawings Approval [40 h] |
|  | 47 | **Level 43 Floor - Shop drawings** |  | 2016-05-05 | 2016-06-20 |  |  |  |  |
| SD-CS-L43-1162 |  | Preparation & Submittals of SD of Wall Finishes at L43 | 30d | 2016-05-05 | 2016-06-08 | SD-CS-L42-1142 SS+7d | 91d | 0d | Shop Drawings Submittals [60 h] |
| SD-CS-L43-1172 |  | Review & Approval of SD of Wall Finishes at L43 | 30d | 2016-05-17 | 2016-06-20 | SD-CS-L43-1162 SS+10d, SD-CS-L43-1162 FF+10d | 127d | 76d | Shop Drawings Approval [40 h] |

| ID | WBS | Activity | Duration | Start | Finish | Predecessors | Total float | Free float | Resources |
| --- | --- | --- | --- | --- | --- | --- | --- | --- | --- |
|  | 48 | **Level 44 Floor - Shop drawings** |  | 2016-05-14 | 2016-06-28 |  |  |  |  |
| SD-CS-L44-1182 |  | Preparation & Submittals of SD of Wall Finishes at L44 | 30d | 2016-05-14 | 2016-06-16 | SD-CS-L43-1162 SS+7d | 91d | 0d | Shop Drawings Submittals [60 h] |
| SD-CS-L44-1192 |  | Review & Approval of SD of Wall Finishes at L44 | 30d | 2016-05-25 | 2016-06-28 | SD-CS-L44-1182 SS+10d, SD-CS-L44-1182 FF+10d | 120d | 73d | Shop Drawings Approval [40 h] |
|  | 49 | **Level 45 Floor - Shop drawings** |  | 2016-05-22 | 2016-07-10 |  |  |  |  |
| SD-CS-L45-1202 |  | Preparation & Submittals of SD of Wall Finishes at L45 | 30d | 2016-05-22 | 2016-06-25 | SD-CS-L44-1182 SS+7d | 91d | 0d | Shop Drawings Submittals [60 h] |
| SD-CS-L45-1212 |  | Review & Approval of SD of Wall Finishes at L45 | 30d | 2016-06-02 | 2016-07-10 | SD-CS-L45-1202 SS+10d, SD-CS-L45-1202 FF+10d | 113d | 79d | Shop Drawings Approval [40 h] |
|  | 50 | **Level 46 Floor - Shop drawings** |  | 2016-05-30 | 2016-07-18 |  |  |  |  |
| SD-CS-L46-1222 |  | Preparation & Submittals of SD of Wall Finishes at L46 | 30d | 2016-05-30 | 2016-07-03 | SD-CS-L45-1202 SS+7d | 91d | 0d | Shop Drawings Submittals [60 h] |
| SD-CS-L46-1232 |  | Review & Approval of SD of Wall Finishes at L46 | 30d | 2016-06-11 | 2016-07-18 | SD-CS-L46-1222 SS+10d, SD-CS-L46-1222 FF+10d | 106d | 73d | Shop Drawings Approval [40 h] |
|  | 53 | **Level 47 Floor - Shop drawings** |  | 2016-06-07 | 2016-07-26 |  |  |  |  |
| SD-CS-L47-1242 |  | Preparation & Submittals of SD of Wall Finishes at L47 | 30d | 2016-06-07 | 2016-07-14 | SD-CS-L46-1222 SS+7d | 91d | 0d | Shop Drawings Submittals [60 h] |
| SD-CS-L47-1252 |  | Review & Approval of SD of Wall Finishes at L47 | 30d | 2016-06-19 | 2016-07-26 | SD-CS-L47-1242 SS+10d, SD-CS-L47-1242 FF+10d | 99d | 70d | Shop Drawings Approval [40 h] |
|  | 51 | **Level 48 Floor - Shop drawings** |  | 2016-06-15 | 2016-07-23 |  |  |  |  |
| SD-CS-L48-1262 |  | Preparation & Submittals of SD of Wall Finishes at L48 | 20d | 2016-06-15 | 2016-07-11 | SD-CS-L47-1242 SS+7d | 91d | 0d | Shop Drawings Submittals [60 h] |
| SD-CS-L48-1272 |  | Review & Approval of SD of Wall Finishes at L48 | 20d | 2016-06-27 | 2016-07-23 | SD-CS-L48-1262 SS+10d, SD-CS-L48-1262 FF+10d | 102d | 66d | Shop Drawings Approval [40 h] |
|  | 52 | **Level 49 Floor - Shop drawings** |  | 2016-06-23 | 2016-07-31 |  |  |  |  |
| SD-CS-L49-1282 |  | Preparation & Submittals of SD of Wall Finishes at L49 | 20d | 2016-06-23 | 2016-07-19 | SD-CS-L48-1262 SS+7d | 91d | 0d | Shop Drawings Submittals [60 h] |
| SD-CS-L49-1292 |  | Review & Approval of SD of Wall Finishes at L49 | 20d | 2016-07-09 | 2016-07-31 | SD-CS-L49-1282 SS+10d, SD-CS-L49-1282 FF+10d | 95d | 77d | Shop Drawings Approval [40 h] |
|  | 54 | **Level 50 Floor - Shop drawings** |  | 2016-07-02 | 2016-08-08 |  |  |  |  |
| SD-CS-L50-1302 |  | Preparation & Submittals of SD of Wall Finishes at L50 | 20d | 2016-07-02 | 2016-07-27 | SD-CS-L49-1282 SS+7d | 91d | 0d | Shop Drawings Submittals [60 h] |
| SD-CS-L50-1312 |  | Review & Approval of SD of Wall Finishes at L50 | 20d | 2016-07-17 | 2016-08-08 | SD-CS-L50-1302 SS+10d, SD-CS-L50-1302 FF+10d | 91d | 78d | Shop Drawings Approval [40 h] |
|  | 55 | **Level 51 Floor - Shop drawings** |  | 2016-07-13 | 2016-08-28 |  |  |  |  |
| SD-CS-L51-1862 |  | Preparation & Submittals of SD of Wall Finishes at L51 | 30d | 2016-07-13 | 2016-08-16 | SD-CS-L50-1302 SS+7d | 100d | 0d | Shop Drawings Submittals [60 h] |
| SD-CS-L51-1872 |  | Review & Approval of SD of Wall Finishes at L51 | 30d | 2016-07-25 | 2016-08-28 | SD-CS-L51-1862 SS+10d, SD-CS-L51-1862 FF+10d | 100d | 60d | Shop Drawings Approval [40 h] |

| ID | WBS | Activity | Duration | Start | Finish | Predecessors | Total float | Free float | Resources | Cost |
| --- | --- | --- | --- | --- | --- | --- | --- | --- | --- | --- |
|  | 5 | **Ceiling Finishes** |  | 2015-03-11 | 2016-03-29 |  |  |  |  |  |
|  | R | **Basement 3 Floor level - Shop drawings** |  | 2015-03-11 | 2015-04-26 |  |  |  |  |  |
| SD-CS-B3-482 |  | Preparation & Submittals of SD of Ceiling Finishes at B3 | 30d | 2015-03-11 | 2015-04-14 | PQ-CS-C-912, PQ-CS-C-952 | 139d | 0d | Shop Drawings Submittals [60 h] | 2,287.02 |
| SD-CS-B3-492 |  | Review & Approval of SD of Ceiling Finishes at B3 | 30d | 2015-03-23 | 2015-04-26 | SD-CS-B3-482 SS+10d, SD-CS-B3-482 FF+10d | 385d | 282d | Shop Drawings Approval [40 h] | 2,287.02 |
|  | 1 | **Basement 2 Floor level - Shop drawings** |  | 2015-03-17 | 2015-05-02 |  |  |  |  |  |
| SD-CS-B3-462 |  | Preparation & Submittals of SD of Ceiling Finishes at B2 | 30d | 2015-03-17 | 2015-04-20 | SD-CS-B3-482 SS+5d | 139d | 0d | Shop Drawings Submittals [60 h] | 2,287.02 |
| SD-CS-B3-472 |  | Review & Approval of SD of Ceiling Finishes at B2 | 30d | 2015-03-29 | 2015-05-02 | SD-CS-B3-462 SS+10d, SD-CS-B3-462 FF+10d | 312d | 297d | Shop Drawings Approval [40 h] | 2,287.02 |
|  | 2 | **Basement 1 Floor level - Shop drawings** |  | 2015-03-23 | 2015-05-07 |  |  |  |  |  |
| SD-CS-B2-322 |  | Preparation & Submittals of SD of Ceiling Finishes at B1 | 30d | 2015-03-23 | 2015-04-26 | SD-CS-B3-462 SS+5d | 139d | 0d | Shop Drawings Submittals [60 h] | 2,287.02 |
| SD-CS-B2-332 |  | Review & Approval of SD of Ceiling Finishes at B1 | 30d | 2015-04-04 | 2015-05-07 | SD-CS-B2-322 SS+10d, SD-CS-B2-322 FF+10d | 332d | 312d | Shop Drawings Approval [40 h] | 2,287.02 |
|  | 3 | **Ground Floor level - Shop drawings** |  | 2015-03-29 | 2015-05-13 |  |  |  |  |  |
| SD-CS-B1-322 |  | Preparation & Submittals of SD of Ceiling Finishes at GF | 30d | 2015-03-29 | 2015-05-02 | SD-CS-B2-322 SS+5d, PQ-CS-C-1132, G-CD-003 | 139d | 0d | Shop Drawings Submittals [60 h] |  |
| SD-CS-B1-332 |  | Review & Approval of SD of Ceiling Finishes at GF | 30d | 2015-04-09 | 2015-05-13 | SD-CS-B1-322 SS+10d, SD-CS-B1-322 FF+10d | 220d | 128d | Shop Drawings Approval [40 h] |  |
|  | 4 | **Mezzanine Floor level - Shop drawings** |  | 2015-04-04 | 2015-05-19 |  |  |  |  |  |
| SD-CS-GF-322 |  | Preparation & Submittals of SD of Ceiling Finishes at ML | 30d | 2015-04-04 | 2015-05-07 | SD-CS-B1-322 SS+5d | 139d | 0d | Shop Drawings Submittals [60 h] |  |
| SD-CS-GF-332 |  | Review & Approval of SD of Ceiling Finishes at ML | 30d | 2015-04-15 | 2015-05-19 | SD-CS-GF-322 SS+10d, SD-CS-GF-322 FF+10d | 253d | 123d | Shop Drawings Approval [40 h] |  |
|  | 5 | **Level 1 Floor - Shop drawings** |  | 2015-04-09 | 2015-05-25 |  |  |  |  |  |
| SD-CS-L1-342 |  | Preparation & Submittals of SD of Ceiling Finishes at L1 | 30d | 2015-04-09 | 2015-05-13 | SD-CS-GF-322 SS+5d | 213d | 0d | Shop Drawings Submittals [60 h] |  |
| SD-CS-L1-352 |  | Review & Approval of SD of Ceiling Finishes at L1 | 30d | 2015-04-21 | 2015-05-25 | SD-CS-L1-342 SS+10d, SD-CS-L1-342 FF+10d | 213d | 118d | Shop Drawings Approval [40 h] |  |
|  | 6 | **Level 2 Floor - Shop drawings** |  | 2015-04-09 | 2015-05-25 |  |  |  |  |  |
| SD-CS-L2-362 |  | Preparation & Submittals of SD of Ceiling Finishes at L2 | 30d | 2015-04-09 | 2015-05-13 | SD-CS-GF-322 SS+5d | 139d | 0d | Shop Drawings Submittals [60 h] |  |
| SD-CS-L2-372 |  | Review & Approval of SD of Ceiling Finishes at L2 | 30d | 2015-04-21 | 2015-05-25 | SD-CS-L2-362 SS+10d, SD-CS-L2-362 FF+10d | 222d | 118d | Shop Drawings Approval [40 h] |  |
|  | 7 | **Level 3 Floor - Shop drawings** |  | 2015-04-15 | 2015-05-31 |  |  |  |  |  |
| SD-CS-L3-382 |  | Preparation & Submittals of SD ofCeiling Finishes at L3 | 30d | 2015-04-15 | 2015-05-19 | SD-CS-L2-362 SS+5d | 139d | 0d | Shop Drawings Submittals [60 h] |  |
| SD-CS-L3-392 |  | Review & Approval of SD of Ceiling Finishes at L3 | 30d | 2015-04-27 | 2015-05-31 | SD-CS-L3-382 SS+10d, SD-CS-L3-382 FF+10d | 252d | 141d | Shop Drawings Approval [40 h] |  |

Notes:
- SD-CS-B3-482: Expenses: CF 2287.02
- SD-CS-B3-492: Expenses: CF 2287.02
- SD-CS-B3-462: Expenses: CF 2287.02
- SD-CS-B3-472: Expenses: CF 2287.02
- SD-CS-B2-322: Expenses: CF 2287.02
- SD-CS-B2-332: Expenses: CF 2287.02

| ID | WBS | Activity | Duration | Start | Finish | Predecessors | Total float | Free float | Resources |
| --- | --- | --- | --- | --- | --- | --- | --- | --- | --- |
|  | 8 | **Level 4 Floor - Shop drawings** |  | 2015-04-21 | 2015-06-06 |  |  |  |  |
| SD-CS-L4-1402 |  | Preparation & Submittals of SD of Ceiling Finishes at L4 | 30d | 2015-04-21 | 2015-05-25 | SD-CS-L3-382 SS+5d | 139d | 0d | Shop Drawings Submittals [60 h] |
| SD-CS-L4-1412 |  | Review & Approval of SD of Ceiling Finishes at L4 | 30d | 2015-05-03 | 2015-06-06 | SD-CS-L4-1402 SS+10d, SD-CS-L4-1402 FF+10d | 243d | 153d | Shop Drawings Approval [40 h] |
|  | 9 | **Level 5 Floor - Shop drawings** |  | 2015-04-27 | 2015-06-11 |  |  |  |  |
| SD-CS-L5-422 |  | Preparation & Submittals of SD of Ceiling Finishes at L5 | 30d | 2015-04-27 | 2015-05-31 | SD-CS-L4-1402 SS+5d | 139d | 0d | Shop Drawings Submittals [60 h] |
| SD-CS-L5-432 |  | Review & Approval of SD of Ceiling Finishes at L5 | 30d | 2015-05-09 | 2015-06-11 | SD-CS-L5-422 SS+10d, SD-CS-L5-422 FF+10d | 267d | 149d | Shop Drawings Approval [40 h] |
|  | 10 | **Level 6 Floor - Shop drawings** |  | 2015-05-03 | 2015-06-17 |  |  |  |  |
| SD-CS-L6-442 |  | Preparation & Submittals of SD of Ceiling Finishes at L6 | 30d | 2015-05-03 | 2015-06-06 | SD-CS-L5-422 SS+5d | 139d | 0d | Shop Drawings Submittals [60 h] |
| SD-CS-L6-452 |  | Review & Approval of SD of Ceiling Finishes at L6 | 30d | 2015-05-14 | 2015-06-17 | SD-CS-L6-442 SS+10d, SD-CS-L6-442 FF+10d | 236d | 139d | Shop Drawings Approval [40 h] |
|  | 11 | **Level 7 Floor - Shop drawings** |  | 2015-05-09 | 2015-06-23 |  |  |  |  |
| SD-CS-L7-462 |  | Preparation & Submittals of SD of Ceiling Finishes at L7 | 30d | 2015-05-09 | 2015-06-11 | SD-CS-L6-442 SS+5d | 139d | 0d | Shop Drawings Submittals [60 h] |
| SD-CS-L7-472 |  | Review & Approval of SD of Ceiling Finishes at L7 | 30d | 2015-05-20 | 2015-06-23 | SD-CS-L7-462 SS+10d, SD-CS-L7-462 FF+10d | 232d | 153d | Shop Drawings Approval [40 h] |
|  | 12 | **Level 8 Floor - Shop drawings** |  | 2015-05-14 | 2015-06-29 |  |  |  |  |
| SD-CS-L8-482 |  | Preparation & Submittals of SD of Ceiling Finishes at L8 | 30d | 2015-05-14 | 2015-06-17 | SD-CS-L7-462 SS+5d | 139d | 0d | Shop Drawings Submittals [60 h] |
| SD-CS-L8-492 |  | Review & Approval of SD of Ceiling Finishes at L8 | 30d | 2015-05-26 | 2015-06-29 | SD-CS-L8-482 SS+10d, SD-CS-L8-482 FF+10d | 235d | 168d | Shop Drawings Approval [40 h] |
|  | 13 | **Level 9 Floor - Shop drawings** |  | 2015-05-20 | 2015-07-05 |  |  |  |  |
| SD-CS-L9-502 |  | Preparation & Submittals of SD of Ceiling Finishes at L9 | 30d | 2015-05-20 | 2015-06-23 | SD-CS-L8-482 SS+5d | 139d | 0d | Shop Drawings Submittals [60 h] |
| SD-CS-L9-512 |  | Review & Approval of SD of Ceiling Finishes at L9 | 30d | 2015-06-01 | 2015-07-05 | SD-CS-L9-502 SS+10d, SD-CS-L9-502 FF+10d | 239d | 163d | Shop Drawings Approval [40 h] |
|  | 14 | **Level 10 Floor - Shop drawings** |  | 2015-05-26 | 2015-07-11 |  |  |  |  |
| SD-CS-L10-522 |  | Preparation & Submittals of SD of Ceiling Finishes at L10 | 30d | 2015-05-26 | 2015-06-29 | SD-CS-L9-502 SS+5d | 139d | 0d | Shop Drawings Submittals [60 h] |
| SD-CS-L10-532 |  | Review & Approval of SD of Ceiling Finishes at L10 | 30d | 2015-06-07 | 2015-07-11 | SD-CS-L10-522 SS+10d, SD-CS-L10-522 FF+10d | 237d | 158d | Shop Drawings Approval [40 h] |
|  | 15 | **Level 11 Floor - Shop drawings** |  | 2015-06-01 | 2015-07-19 |  |  |  |  |
| SD-CS-L11-542 |  | Preparation & Submittals of SD of Ceiling Finishes at L11 | 30d | 2015-06-01 | 2015-07-05 | SD-CS-L10-522 SS+5d | 139d | 0d | Shop Drawings Submittals [60 h] |
| SD-CS-L11-552 |  | Review & Approval of SD of Ceiling Finishes at L11 | 30d | 2015-06-13 | 2015-07-19 | SD-CS-L11-542 SS+10d, SD-CS-L11-542 FF+10d | 262d | 153d | Shop Drawings Approval [40 h] |

| ID | WBS | Activity | Duration | Start | Finish | Predecessors | Total float | Free float | Resources |
| --- | --- | --- | --- | --- | --- | --- | --- | --- | --- |
|  | 16 | **Level 12 Floor - Shop drawings** |  | 2015-06-07 | 2015-07-25 |  |  |  |  |
| SD-CS-L12-562 |  | Preparation & Submittals of SD of Ceiling Finishes at L12 | 30d | 2015-06-07 | 2015-07-11 | SD-CS-L11-542 SS+5d | 139d | 0d | Shop Drawings Submittals [60 h] |
| SD-CS-L12-572 |  | Review & Approval of SD of Ceiling Finishes at L12 | 30d | 2015-06-18 | 2015-07-25 | SD-CS-L12-562 SS+10d, SD-CS-L12-562 FF+10d | 230d | 168d | Shop Drawings Approval [40 h] |
|  | 17 | **Level 13 Floor - Shop drawings** |  | 2015-06-13 | 2015-07-30 |  |  |  |  |
| SD-CS-L13-582 |  | Preparation & Submittals of SD of Ceiling Finishes at L13 | 30d | 2015-06-13 | 2015-07-19 | SD-CS-L12-562 SS+5d | 139d | 0d | Shop Drawings Submittals [60 h] |
| SD-CS-L13-592 |  | Review & Approval of SD of Ceiling Finishes at L13 | 30d | 2015-06-24 | 2015-07-30 | SD-CS-L13-582 SS+10d, SD-CS-L13-582 FF+10d | 226d | 163d | Shop Drawings Approval [40 h] |
|  | 18 | **Level 14 Floor - Shop drawings** |  | 2015-06-18 | 2015-08-05 |  |  |  |  |
| SD-CS-L14-602 |  | Preparation & Submittals of SD of Ceiling Finishes at L14 | 30d | 2015-06-18 | 2015-07-25 | SD-CS-L13-582 SS+5d | 139d | 0d | Shop Drawings Submittals [60 h] |
| SD-CS-L14-612 |  | Review & Approval of SD of Ceiling Finishes at L14 | 30d | 2015-06-30 | 2015-08-05 | SD-CS-L14-602 SS+10d, SD-CS-L14-602 FF+10d | 230d | 158d | Shop Drawings Approval [40 h] |
|  | 19 | **Level 15 Floor - Shop drawings** |  | 2015-06-24 | 2015-08-11 |  |  |  |  |
| SD-CS-L15-622 |  | Preparation & Submittals of SD of Ceiling Finishes at L15 | 30d | 2015-06-24 | 2015-07-30 | SD-CS-L14-602 SS+5d | 139d | 0d | Shop Drawings Submittals [60 h] |
| SD-CS-L15-632 |  | Review & Approval of SD of Ceiling Finishes at L15 | 30d | 2015-07-06 | 2015-08-11 | SD-CS-L15-622 SS+10d, SD-CS-L15-622 FF+10d | 233d | 153d | Shop Drawings Approval [40 h] |
|  | 20 | **Level 16 Floor - Shop drawings** |  | 2015-06-30 | 2015-08-17 |  |  |  |  |
| SD-CS-L16-642 |  | Preparation & Submittals of SD of Ceiling Finishes at L16 | 30d | 2015-06-30 | 2015-08-05 | SD-CS-L15-622 SS+5d | 139d | 0d | Shop Drawings Submittals [60 h] |
| SD-CS-L16-652 |  | Review & Approval of SD of Ceiling Finishes at L16 | 30d | 2015-07-12 | 2015-08-17 | SD-CS-L16-642 SS+10d, SD-CS-L16-642 FF+10d | 231d | 148d | Shop Drawings Approval [40 h] |
|  | 21 | **Level 17 Floor - Shop drawings** |  | 2015-07-06 | 2015-08-23 |  |  |  |  |
| SD-CS-L17-1422 |  | Preparation & Submittals of SD of Ceiling Finishes at L17 | 30d | 2015-07-06 | 2015-08-11 | SD-CS-L16-642 SS+5d | 139d | 0d | Shop Drawings Submittals [60 h] |
| SD-CS-L17-1432 |  | Review & Approval of SD of Ceiling Finishes at L17 | 30d | 2015-07-20 | 2015-08-23 | SD-CS-L17-1422 SS+10d, SD-CS-L17-1422 FF+10d | 282d | 143d | Shop Drawings Approval [40 h] |
|  | 22 | **Level 18 Floor - Shop drawings** |  | 2015-07-12 | 2015-08-29 |  |  |  |  |
| SD-CS-L18-682 |  | Preparation & Submittals of SD of Ceiling Finishes at L18 | 30d | 2015-07-12 | 2015-08-17 | SD-CS-L17-1422 SS+5d | 139d | 0d | Shop Drawings Submittals [60 h] |
| SD-CS-L18-692 |  | Review & Approval of SD of Ceiling Finishes at L18 | 30d | 2015-07-26 | 2015-08-29 | SD-CS-L18-682 SS+10d, SD-CS-L18-682 FF+10d | 224d | 138d | Shop Drawings Approval [40 h] |
|  | 23 | **Level 19 Floor - Shop drawings** |  | 2015-07-20 | 2015-09-03 |  |  |  |  |
| SD-CS-L19-702 |  | Preparation & Submittals of SD of Ceiling Finishes at L19 | 30d | 2015-07-20 | 2015-08-23 | SD-CS-L18-682 SS+5d | 139d | 0d | Shop Drawings Submittals [60 h] |
| SD-CS-L19-712 |  | Review & Approval of SD of Ceiling Finishes at L19 | 30d | 2015-08-01 | 2015-09-03 | SD-CS-L19-702 SS+10d, SD-CS-L19-702 FF+10d | 219d | 136d | Shop Drawings Approval [40 h] |

| ID | WBS | Activity | Duration | Start | Finish | Predecessors | Total float | Free float | Resources |
| --- | --- | --- | --- | --- | --- | --- | --- | --- | --- |
|  | 24 | **Level 20 Floor - Shop drawings** |  | 2015-07-26 | 2015-09-09 |  |  |  |  |
| SD-CS-L20-722 |  | Preparation & Submittals of SD of Ceiling Finishes at L20 | 30d | 2015-07-26 | 2015-08-29 | SD-CS-L19-702 SS+5d | 139d | 0d | Shop Drawings Submittals [60 h] |
| SD-CS-L20-732 |  | Review & Approval of SD of Ceiling Finishes at L20 | 30d | 2015-08-06 | 2015-09-09 | SD-CS-L20-722 SS+10d, SD-CS-L20-722 FF+10d | 223d | 148d | Shop Drawings Approval [40 h] |
|  | 25 | **Level 21 Floor - Shop drawings** |  | 2015-08-01 | 2015-09-15 |  |  |  |  |
| SD-CS-L21-742 |  | Preparation & Submittals of SD of Ceiling Finishes at L21 | 30d | 2015-08-01 | 2015-09-03 | SD-CS-L20-722 SS+5d | 139d | 0d | Shop Drawings Submittals [60 h] |
| SD-CS-L21-752 |  | Review & Approval of SD of Ceiling Finishes at L21 | 30d | 2015-08-12 | 2015-09-15 | SD-CS-L21-742 SS+10d, SD-CS-L21-742 FF+10d | 226d | 143d | Shop Drawings Approval [40 h] |
|  | 26 | **Level 22 Floor - Shop drawings** |  | 2015-08-06 | 2015-09-24 |  |  |  |  |
| SD-CS-L22-762 |  | Preparation & Submittals of SD of Ceiling Finishes at L22 | 30d | 2015-08-06 | 2015-09-09 | SD-CS-L21-742 SS+5d | 139d | 0d | Shop Drawings Submittals [60 h] |
| SD-CS-L22-772 |  | Review & Approval of SD of Ceiling Finishes at L22 | 30d | 2015-08-18 | 2015-09-24 | SD-CS-L22-762 SS+10d, SD-CS-L22-762 FF+10d | 224d | 145d | Shop Drawings Approval [40 h] |
|  | 27 | **Level 23 Floor - Shop drawings** |  | 2015-08-12 | 2015-09-30 |  |  |  |  |
| SD-CS-L23-782 |  | Preparation & Submittals of SD of Ceiling Finishes at L23 | 30d | 2015-08-12 | 2015-09-15 | SD-CS-L22-762 SS+5d | 139d | 0d | Shop Drawings Submittals [60 h] |
| SD-CS-L23-792 |  | Review & Approval of SD of Ceiling Finishes at L23 | 30d | 2015-08-24 | 2015-09-30 | SD-CS-L23-782 SS+10d, SD-CS-L23-782 FF+10d | 238d | 148d | Shop Drawings Approval [40 h] |
|  | 28 | **Level 24 Floor - Shop drawings** |  | 2015-08-18 | 2015-10-06 |  |  |  |  |
| SD-CS-L24-802 |  | Preparation & Submittals of SD of Ceiling Finishes at L24 | 30d | 2015-08-18 | 2015-09-24 | SD-CS-L23-782 SS+5d | 139d | 0d | Shop Drawings Submittals [60 h] |
| SD-CS-L24-812 |  | Review & Approval of SD of Ceiling Finishes at L24 | 30d | 2015-08-30 | 2015-10-06 | SD-CS-L24-802 SS+10d, SD-CS-L24-802 FF+10d | 217d | 143d | Shop Drawings Approval [40 h] |
|  | 29 | **Level 25 Floor - Shop drawings** |  | 2015-08-24 | 2015-10-12 |  |  |  |  |
| SD-CS-L25-822 |  | Preparation & Submittals of SD of Ceiling Finishes at L25 | 30d | 2015-08-24 | 2015-09-30 | SD-CS-L24-802 SS+5d | 139d | 0d | Shop Drawings Submittals [60 h] |
| SD-CS-L25-832 |  | Review & Approval of SD of Ceiling Finishes at L25 | 30d | 2015-09-05 | 2015-10-12 | SD-CS-L25-822 SS+10d, SD-CS-L25-822 FF+10d | 212d | 138d | Shop Drawings Approval [40 h] |
|  | 30 | **Level 26 Floor - Shop drawings** |  | 2015-08-30 | 2015-10-18 |  |  |  |  |
| SD-CS-L26-842 |  | Preparation & Submittals of SD of Ceiling Finishes at L26 | 30d | 2015-08-30 | 2015-10-06 | SD-CS-L25-822 SS+5d | 139d | 0d | Shop Drawings Submittals [60 h] |
| SD-CS-L26-852 |  | Review & Approval of SD of Ceiling Finishes at L26 | 30d | 2015-09-10 | 2015-10-18 | SD-CS-L26-842 SS+10d, SD-CS-L26-842 FF+10d | 216d | 133d | Shop Drawings Approval [40 h] |
|  | 31 | **Level 27 Floor - Shop drawings** |  | 2015-09-05 | 2015-10-24 |  |  |  |  |
| SD-CS-L27-862 |  | Preparation & Submittals of SD of Ceiling Finishes at L27 | 30d | 2015-09-05 | 2015-10-12 | SD-CS-L26-842 SS+5d | 139d | 0d | Shop Drawings Submittals [60 h] |
| SD-CS-L27-872 |  | Review & Approval of SD of Ceiling Finishes at L27 | 30d | 2015-09-16 | 2015-10-24 | SD-CS-L27-862 SS+10d, SD-CS-L27-862 FF+10d | 219d | 128d | Shop Drawings Approval [40 h] |

| ID | WBS | Activity | Duration | Start | Finish | Predecessors | Total float | Free float | Resources |
| --- | --- | --- | --- | --- | --- | --- | --- | --- | --- |
|  | 32 | **Level 28 Floor - Shop drawings** |  | 2015-09-10 | 2015-10-29 |  |  |  |  |
| SD-CS-L28-882 |  | Preparation & Submittals of SD of Ceiling Finishes at L28 | 30d | 2015-09-10 | 2015-10-18 | SD-CS-L27-862 SS+5d | 139d | 0d | Shop Drawings Submittals [60 h] |
| SD-CS-L28-892 |  | Review & Approval of SD of Ceiling Finishes at L28 | 30d | 2015-09-26 | 2015-10-29 | SD-CS-L28-882 SS+10d, SD-CS-L28-882 FF+10d | 217d | 128d | Shop Drawings Approval [40 h] |
|  | 33 | **Level 29 Floor - Shop drawings** |  | 2015-09-16 | 2015-11-04 |  |  |  |  |
| SD-CS-L29-902 |  | Preparation & Submittals of SD of Ceiling Finishes at L29 | 30d | 2015-09-16 | 2015-10-24 | SD-CS-L28-882 SS+5d | 139d | 0d | Shop Drawings Submittals [60 h] |
| SD-CS-L29-912 |  | Review & Approval of SD of Ceiling Finishes at L29 | 30d | 2015-10-01 | 2015-11-04 | SD-CS-L29-902 SS+10d, SD-CS-L29-902 FF+10d | 218d | 123d | Shop Drawings Approval [40 h] |
|  | 34 | **Level 30 Floor - Shop drawings** |  | 2015-09-26 | 2015-11-10 |  |  |  |  |
| SD-CS-L30-922 |  | Preparation & Submittals of SD of Ceiling Finishes at L30 | 30d | 2015-09-26 | 2015-10-29 | SD-CS-L29-902 SS+5d | 139d | 0d | Shop Drawings Submittals [60 h] |
| SD-CS-L30-932 |  | Review & Approval of SD of Ceiling Finishes at L30 | 30d | 2015-10-07 | 2015-11-10 | SD-CS-L30-922 SS+10d, SD-CS-L30-922 FF+10d | 210d | 143d | Shop Drawings Approval [40 h] |
|  | 35 | **Level 31 Floor - Shop drawings** |  | 2015-10-01 | 2015-11-16 |  |  |  |  |
| SD-CS-L31-942 |  | Preparation & Submittals of SD of Ceiling Finishes at L31 | 30d | 2015-10-01 | 2015-11-04 | SD-CS-L30-922 SS+5d | 139d | 0d | Shop Drawings Submittals [60 h] |
| SD-CS-L31-952 |  | Review & Approval of SD of Ceiling Finishes at L31 | 30d | 2015-10-13 | 2015-11-16 | SD-CS-L31-942 SS+10d, SD-CS-L31-942 FF+10d | 205d | 150d | Shop Drawings Approval [40 h] |
|  | 36 | **Level 32 Floor - Shop drawings** |  | 2015-10-07 | 2015-11-22 |  |  |  |  |
| SD-CS-L32-962 |  | Preparation & Submittals of SD of Ceiling Finishes at L32 | 30d | 2015-10-07 | 2015-11-10 | SD-CS-L31-942 SS+5d | 139d | 0d | Shop Drawings Submittals [60 h] |
| SD-CS-L32-972 |  | Review & Approval of SD of Ceiling Finishes at L32 | 30d | 2015-10-19 | 2015-11-22 | SD-CS-L32-962 SS+10d, SD-CS-L32-962 FF+10d | 209d | 146d | Shop Drawings Approval [40 h] |
|  | 37 | **Level 33 Floor - Shop drawings** |  | 2015-10-13 | 2015-11-28 |  |  |  |  |
| SD-CS-L33-982 |  | Preparation & Submittals of SD of Ceiling Finishes at L33 | 30d | 2015-10-13 | 2015-11-16 | SD-CS-L32-962 SS+5d | 139d | 0d | Shop Drawings Submittals [60 h] |
| SD-CS-L33-992 |  | Review & Approval of SD of Ceiling Finishes at L33 | 30d | 2015-10-25 | 2015-11-28 | SD-CS-L33-982 SS+10d, SD-CS-L33-982 FF+10d | 193d | 147d | Shop Drawings Approval [40 h] |
|  | 38 | **Level 34 Floor - Shop drawings** |  | 2015-10-19 | 2015-12-03 |  |  |  |  |
| SD-CS-L34-1002 |  | Preparation & Submittals of SD of Ceiling Finishes at L34 | 30d | 2015-10-19 | 2015-11-22 | SD-CS-L33-982 SS+5d | 139d | 0d | Shop Drawings Submittals [60 h] |
| SD-CS-L34-1012 |  | Review & Approval of SD of Ceiling Finishes at L34 | 30d | 2015-10-31 | 2015-12-03 | SD-CS-L34-1002 SS+10d, SD-CS-L34-1002 FF+10d | 203d | 148d | Shop Drawings Approval [40 h] |
|  | 39 | **Level 35 Floor - Shop drawings** |  | 2015-10-25 | 2015-12-09 |  |  |  |  |
| SD-CS-L35-1022 |  | Preparation & Submittals of SD of Ceiling Finishes at L35 | 30d | 2015-10-25 | 2015-11-28 | SD-CS-L34-1002 SS+5d | 139d | 0d | Shop Drawings Submittals [60 h] |
| SD-CS-L35-1032 |  | Review & Approval of SD of Ceiling Finishes at L35 | 30d | 2015-11-05 | 2015-12-09 | SD-CS-L35-1022 SS+10d, SD-CS-L35-1022 FF+10d | 198d | 157d | Shop Drawings Approval [40 h] |

| ID | WBS | Activity | Duration | Start | Finish | Predecessors | Total float | Free float | Resources |
| --- | --- | --- | --- | --- | --- | --- | --- | --- | --- |
|  | 40 | **Level 36 Floor - Shop drawings** |  | 2015-10-31 | 2015-12-15 |  |  |  |  |
| SD-CS-L36-1042 |  | Preparation & Submittals of SD of Ceiling Finishes at L36 | 30d | 2015-10-31 | 2015-12-03 | SD-CS-L35-1022 SS+5d | 139d | 0d | Shop Drawings Submittals [60 h] |
| SD-CS-L36-1052 |  | Review & Approval of SD of Ceiling Finishes at L36 | 30d | 2015-11-11 | 2015-12-15 | SD-CS-L36-1042 SS+10d, SD-CS-L36-1042 FF+10d | 193d | 152d | Shop Drawings Approval [40 h] |
|  | 41 | **Level 37 Floor - Shop drawings** |  | 2015-11-05 | 2015-12-22 |  |  |  |  |
| SD-CS-L37-1062 |  | Preparation & Submittals of SD of Ceiling Finishes at L37 | 30d | 2015-11-05 | 2015-12-09 | SD-CS-L36-1042 SS+5d | 139d | 0d | Shop Drawings Submittals [60 h] |
| SD-CS-L37-1072 |  | Review & Approval of SD of Ceiling Finishes at L37 | 30d | 2015-11-17 | 2015-12-22 | SD-CS-L37-1062 SS+10d, SD-CS-L37-1062 FF+10d | 198d | 151d | Shop Drawings Approval [40 h] |
|  | 42 | **Level 38 Floor - Shop drawings** |  | 2015-11-11 | 2015-12-28 |  |  |  |  |
| SD-CS-L38-1082 |  | Preparation & Submittals of SD of Ceiling Finishes at L38 | 30d | 2015-11-11 | 2015-12-15 | SD-CS-L37-1062 SS+5d | 139d | 0d | Shop Drawings Submittals [60 h] |
| SD-CS-L38-1092 |  | Review & Approval of SD of Ceiling Finishes at L38 | 30d | 2015-11-23 | 2015-12-28 | SD-CS-L38-1082 SS+10d, SD-CS-L38-1082 FF+10d | 202d | 152d | Shop Drawings Approval [40 h] |
|  | 43 | **Level 39 Floor - Shop drawings** |  | 2015-11-18 | 2016-01-04 |  |  |  |  |
| SD-CS-L39-1102 |  | Preparation & Submittals of SD of Ceiling Finishes at L39 | 30d | 2015-11-18 | 2015-12-23 | SD-CS-L38-1082 SS+6d | 139d | 0d | Shop Drawings Submittals [60 h] |
| SD-CS-L39-1112 |  | Review & Approval of SD of Ceiling Finishes at L39 | 30d | 2015-11-30 | 2016-01-04 | SD-CS-L39-1102 SS+10d, SD-CS-L39-1102 FF+10d | 199d | 160d | Shop Drawings Approval [40 h] |
|  | 44 | **Level 40 Floor - Shop drawings** |  | 2015-11-25 | 2016-01-11 |  |  |  |  |
| SD-CS-L40-1122 |  | Preparation & Submittals of SD of Ceiling Finishes at L40 | 30d | 2015-11-25 | 2015-12-30 | SD-CS-L39-1102 SS+6d | 139d | 0d | Shop Drawings Submittals [60 h] |
| SD-CS-L40-1132 |  | Review & Approval of SD of Ceiling Finishes at L40 | 30d | 2015-12-07 | 2016-01-11 | SD-CS-L40-1122 SS+10d, SD-CS-L40-1122 FF+10d | 166d | 129d | Shop Drawings Approval [40 h] |
|  | 45 | **Level 41 Floor - Shop drawings** |  | 2015-12-02 | 2016-01-18 |  |  |  |  |
| SD-CS-L41-1142 |  | Preparation & Submittals of SD of Ceiling Finishes at L41 | 30d | 2015-12-02 | 2016-01-06 | SD-CS-L40-1122 SS+6d | 139d | 0d | Shop Drawings Submittals [60 h] |
| SD-CS-L41-1152 |  | Review & Approval of SD of Ceiling Finishes at L41 | 30d | 2015-12-14 | 2016-01-18 | SD-CS-L41-1142 SS+10d, SD-CS-L41-1142 FF+10d | 165d | 127d | Shop Drawings Approval [40 h] |
|  | 46 | **Level 42 Floor - Shop drawings** |  | 2015-12-09 | 2016-01-25 |  |  |  |  |
| SD-CS-L42-1162 |  | Preparation & Submittals of SD of Ceiling Finishes at L42 | 30d | 2015-12-09 | 2016-01-13 | SD-CS-L41-1142 SS+6d | 139d | 0d | Shop Drawings Submittals [60 h] |
| SD-CS-L42-1172 |  | Review & Approval of SD of Ceiling Finishes at L42 | 30d | 2015-12-22 | 2016-01-25 | SD-CS-L42-1162 SS+10d, SD-CS-L42-1162 FF+10d | 154d | 135d | Shop Drawings Approval [40 h] |
|  | 47 | **Level 43 Floor - Shop drawings** |  | 2015-12-16 | 2016-02-01 |  |  |  |  |
| SD-CS-L43-1182 |  | Preparation & Submittals of SD of Ceiling Finishes at L43 | 30d | 2015-12-16 | 2016-01-20 | SD-CS-L42-1162 SS+6d | 139d | 0d | Shop Drawings Submittals [60 h] |
| SD-CS-L43-1192 |  | Review & Approval of SD of Ceiling Finishes at L43 | 30d | 2015-12-29 | 2016-02-01 | SD-CS-L43-1182 SS+10d, SD-CS-L43-1182 FF+10d | 148d | 129d | Shop Drawings Approval [40 h] |

| ID | WBS | Activity | Duration | Start | Finish | Predecessors | Total float | Free float | Resources |
| --- | --- | --- | --- | --- | --- | --- | --- | --- | --- |
|  | 48 | **Level 44 Floor - Shop drawings** |  | 2015-12-24 | 2016-02-08 |  |  |  |  |
| SD-CS-L44-1202 |  | Preparation & Submittals of SD of Ceiling Finishes at L44 | 30d | 2015-12-24 | 2016-01-27 | SD-CS-L43-1182 SS+6d | 139d | 0d | Shop Drawings Submittals [60 h] |
| SD-CS-L44-1212 |  | Review & Approval of SD of Ceiling Finishes at L44 | 30d | 2016-01-05 | 2016-02-08 | SD-CS-L44-1202 SS+10d, SD-CS-L44-1202 FF+10d | 162d | 127d | Shop Drawings Approval [40 h] |
|  | 49 | **Level 45 Floor - Shop drawings** |  | 2015-12-31 | 2016-02-16 |  |  |  |  |
| SD-CS-L45-1222 |  | Preparation & Submittals of SD of Ceiling Finishes at L45 | 30d | 2015-12-31 | 2016-02-03 | SD-CS-L44-1202 SS+6d | 139d | 0d | Shop Drawings Submittals [60 h] |
| SD-CS-L45-1232 |  | Review & Approval of SD of Ceiling Finishes at L45 | 30d | 2016-01-12 | 2016-02-16 | SD-CS-L45-1222 SS+10d, SD-CS-L45-1222 FF+10d | 156d | 134d | Shop Drawings Approval [40 h] |
|  | 50 | **Level 46 Floor - Shop drawings** |  | 2016-01-07 | 2016-02-23 |  |  |  |  |
| SD-CS-L46-1242 |  | Preparation & Submittals of SD of Ceiling Finishes at L46 | 30d | 2016-01-07 | 2016-02-11 | SD-CS-L45-1222 SS+6d | 139d | 0d | Shop Drawings Submittals [60 h] |
| SD-CS-L46-1252 |  | Review & Approval of SD of Ceiling Finishes at L46 | 30d | 2016-01-19 | 2016-02-23 | SD-CS-L46-1242 SS+10d, SD-CS-L46-1242 FF+10d | 150d | 129d | Shop Drawings Approval [40 h] |
|  | 53 | **Level 47 Floor - Shop drawings** |  | 2016-01-14 | 2016-03-01 |  |  |  |  |
| SD-CS-L47-1262 |  | Preparation & Submittals of SD of Ceiling Finishes at L47 | 30d | 2016-01-14 | 2016-02-18 | SD-CS-L46-1242 SS+6d | 139d | 0d | Shop Drawings Submittals [60 h] |
| SD-CS-L47-1272 |  | Review & Approval of SD of Ceiling Finishes at L47 | 30d | 2016-01-26 | 2016-03-01 | SD-CS-L47-1262 SS+10d, SD-CS-L47-1262 FF+10d | 144d | 127d | Shop Drawings Approval [40 h] |
|  | 51 | **Level 48 Floor - Shop drawings** |  | 2016-01-21 | 2016-03-08 |  |  |  |  |
| SD-CS-L48-1282 |  | Preparation & Submittals of SD of Ceiling Finishes at L48 | 30d | 2016-01-21 | 2016-02-25 | SD-CS-L47-1262 SS+6d | 139d | 0d | Shop Drawings Submittals [60 h] |
| SD-CS-L48-1292 |  | Review & Approval of SD of Ceiling Finishes at L48 | 30d | 2016-02-02 | 2016-03-08 | SD-CS-L48-1282 SS+10d, SD-CS-L48-1282 FF+10d | 144d | 122d | Shop Drawings Approval [40 h] |
|  | 52 | **Level 49 Floor - Shop drawings** |  | 2016-01-28 | 2016-03-15 |  |  |  |  |
| SD-CS-L49-1302 |  | Preparation & Submittals of SD of Ceiling Finishes at L49 | 30d | 2016-01-28 | 2016-03-03 | SD-CS-L48-1282 SS+6d | 139d | 0d | Shop Drawings Submittals [60 h] |
| SD-CS-L49-1312 |  | Review & Approval of SD of Ceiling Finishes at L49 | 30d | 2016-02-09 | 2016-03-15 | SD-CS-L49-1302 SS+10d, SD-CS-L49-1302 FF+10d | 144d | 126d | Shop Drawings Approval [40 h] |
|  | 54 | **Level 50 Floor - Shop drawings** |  | 2016-02-04 | 2016-03-22 |  |  |  |  |
| SD-CS-L50-1322 |  | Preparation & Submittals of SD of Ceiling Finishes at L50 | 30d | 2016-02-04 | 2016-03-10 | SD-CS-L49-1302 SS+6d | 139d | 0d | Shop Drawings Submittals [60 h] |
| SD-CS-L50-1332 |  | Review & Approval of SD of Ceiling Finishes at L50 | 30d | 2016-02-17 | 2016-03-22 | SD-CS-L50-1322 SS+10d, SD-CS-L50-1322 FF+10d | 141d | 128d | Shop Drawings Approval [40 h] |
|  | 55 | **Level 51 Floor - Shop drawings** |  | 2016-02-13 | 2016-03-29 |  |  |  |  |
| SD-CS-L51-1922 |  | Preparation & Submittals of SD of Ceiling Finishes at L51 | 30d | 2016-02-13 | 2016-03-17 | SD-CS-L50-1322 SS+6d | 139d | 0d | Shop Drawings Submittals [60 h] |
| SD-CS-L51-1932 |  | Review & Approval of SD of Ceiling Finishes at L51 | 30d | 2016-02-24 | 2016-03-29 | SD-CS-L51-1922 SS+10d, SD-CS-L51-1922 FF+10d | 139d | 121d | Shop Drawings Approval [40 h] |

| ID | WBS | Activity | Duration | Start | Finish | Predecessors | Total float | Free float | Resources | Cost |
| --- | --- | --- | --- | --- | --- | --- | --- | --- | --- | --- |
|  | 6 | **Doors & Windows** |  | 2015-06-18 | 2016-02-14 |  |  |  |  |  |
|  | R | **Basement 3 Floor level - Shop drawings** |  | 2015-06-18 | 2015-08-05 |  |  |  |  |  |
| SD-CS-B3-522 |  | Preparation & Submittals of SD of Doors & Windows at B3 | 30d | 2015-06-18 | 2015-07-25 | PQ-CS-C-1012, PQ-CS-C-1032, PQ-CS-C-1052, PQ-CS-C-1072, PQ-CS-C-1092, PQ-CS-C-1112 | 99d | 0d | Shop Drawings Submittals [60 h] | 2,287.02 |
| SD-CS-B3-532 |  | Review & Approval of SD of Doors & Windows at B3 | 30d | 2015-06-30 | 2015-08-05 | SD-CS-B3-522 SS+10d, SD-CS-B3-522 FF+10d | 383d | 87d | Shop Drawings Approval [40 h] | 2,287.02 |
|  | 1 | **Basement 2 Floor level - Shop drawings** |  | 2015-06-25 | 2015-08-12 |  |  |  |  |  |
| SD-CS-B3-502 |  | Preparation & Submittals of SD of Doors & Windows at B2 | 30d | 2015-06-25 | 2015-08-01 | SD-CS-B3-522 SS+6d | 99d | 0d | Shop Drawings Submittals [60 h] | 2,287.02 |
| SD-CS-B3-512 |  | Review & Approval of SD of Doors & Windows at B2 | 30d | 2015-07-07 | 2015-08-12 | SD-CS-B3-502 SS+10d, SD-CS-B3-502 FF+10d | 316d | 96d | Shop Drawings Approval [40 h] | 2,287.02 |
|  | 2 | **Basement 1 Floor level - Shop drawings** |  | 2015-07-02 | 2015-08-19 |  |  |  |  |  |
| SD-CS-B2-342 |  | Preparation & Submittals of SD of Doors & Windows at B1 | 30d | 2015-07-02 | 2015-08-08 | SD-CS-B3-502 SS+6d | 99d | 0d | Shop Drawings Submittals [60 h] | 2,287.02 |
| SD-CS-B2-352 |  | Review & Approval of SD of Doors & Windows at B1 | 30d | 2015-07-14 | 2015-08-19 | SD-CS-B2-342 SS+10d, SD-CS-B2-342 FF+10d | 335d | 104d | Shop Drawings Approval [40 h] | 2,287.02 |
|  | 3 | **Ground Floor level - Shop drawings** |  | 2015-07-09 | 2015-08-26 |  |  |  |  |  |
| SD-CS-B1-342 |  | Preparation & Submittals of SD of Doors & Windows at GF | 30d | 2015-07-09 | 2015-08-15 | SD-CS-B2-342 SS+6d, G-CD-003 | 99d | 0d | Shop Drawings Submittals [60 h] | 6,861.05 |
| SD-CS-B1-352 |  | Review & Approval of SD of Doors & Windows at GF | 30d | 2015-07-23 | 2015-08-26 | SD-CS-B1-342 SS+10d, SD-CS-B1-342 FF+10d | 111d | 0d | Shop Drawings Approval [40 h] | 6,861.05 |
|  | 4 | **Mezzanine Floor level - Shop drawings** |  | 2015-07-19 | 2015-09-02 |  |  |  |  |  |
| SD-CS-GF-342 |  | Preparation & Submittals of SD of Doors & Windows at ML | 30d | 2015-07-19 | 2015-08-22 | SD-CS-B1-342 SS+6d | 99d | 0d | Shop Drawings Submittals [60 h] |  |
| SD-CS-GF-352 |  | Review & Approval of SD of Doors & Windows at ML | 30d | 2015-07-30 | 2015-09-02 | SD-CS-GF-342 SS+10d, SD-CS-GF-342 FF+10d | 105d | 0d | Shop Drawings Approval [40 h] |  |
|  | 5 | **Level 1 Floor - Shop drawings** |  | 2015-07-26 | 2015-09-09 |  |  |  |  |  |
| SD-CS-L1-362 |  | Preparation & Submittals of SD of Doors & Windows at L1 | 30d | 2015-07-26 | 2015-08-29 | SD-CS-GF-342 SS+6d | 99d | 0d | Shop Drawings Submittals [60 h] |  |
| SD-CS-L1-372 |  | Review & Approval of SD of Doors & Windows at L1 | 30d | 2015-08-06 | 2015-09-09 | SD-CS-L1-362 SS+10d, SD-CS-L1-362 FF+10d | 99d | 0d | Shop Drawings Approval [40 h] |  |
|  | 6 | **Level 2 Floor - Shop drawings** |  | 2015-07-22 | 2015-09-06 |  |  |  |  |  |
| SD-CS-L2-382 |  | Preparation & Submittals of SD of Doors & Windows at L2 | 30d | 2015-07-22 | 2015-08-25 | SD-CS-GF-342 SS+3d | 113d | 0d | Shop Drawings Submittals [60 h] |  |
| SD-CS-L2-392 |  | Review & Approval of SD of Doors & Windows at L2 | 30d | 2015-08-03 | 2015-09-06 | SD-CS-L2-382 SS+10d, SD-CS-L2-382 FF+10d | 113d | 11d | Shop Drawings Approval [40 h] |  |
|  | 7 | **Level 3 Floor - Shop drawings** |  | 2015-07-26 | 2015-09-09 |  |  |  |  |  |
| SD-CS-L3-402 |  | Preparation & Submittals of SD ofDoors & Windows at L3 | 30d | 2015-07-26 | 2015-08-29 | SD-CS-L2-382 SS+3d | 118d | 0d | Shop Drawings Submittals [60 h] |  |
| SD-CS-L3-412 |  | Review & Approval of SD of Doors & Windows at L3 | 30d | 2015-08-06 | 2015-09-09 | SD-CS-L3-402 SS+10d, SD-CS-L3-402 FF+10d | 118d | 16d | Shop Drawings Approval [40 h] |  |

Notes:
- SD-CS-B3-522: Expenses: DS 2287.02
- SD-CS-B3-532: Expenses: DS 2287.02
- SD-CS-B3-502: Expenses: DS 2287.02
- SD-CS-B3-512: Expenses: DS 2287.02
- SD-CS-B2-342: Expenses: DS 2287.02
- SD-CS-B2-352: Expenses: DS 2287.02
- SD-CS-B1-342: Expenses: 1 6861.05
- SD-CS-B1-352: Expenses: 1 6861.05

| ID | WBS | Activity | Duration | Start | Finish | Predecessors | Total float | Free float | Resources |
| --- | --- | --- | --- | --- | --- | --- | --- | --- | --- |
|  | 8 | **Level 4 Floor - Shop drawings** |  | 2015-07-29 | 2015-09-13 |  |  |  |  |
| SD-CS-L4-1422 |  | Preparation & Submittals of SD of Doors & Windows at L4 | 30d | 2015-07-29 | 2015-09-01 | SD-CS-L3-402 SS+3d | 123d | 0d | Shop Drawings Submittals [60 h] |
| SD-CS-L4-1432 |  | Review & Approval of SD of Doors & Windows at L4 | 30d | 2015-08-10 | 2015-09-13 | SD-CS-L4-1422 SS+10d, SD-CS-L4-1422 FF+10d | 123d | 21d | Shop Drawings Approval [40 h] |
|  | 9 | **Level 5 Floor - Shop drawings** |  | 2015-08-02 | 2015-09-16 |  |  |  |  |
| SD-CS-L5-442 |  | Preparation & Submittals of SD of Doors & Windows at L5 | 30d | 2015-08-02 | 2015-09-05 | SD-CS-L4-1422 SS+3d | 128d | 0d | Shop Drawings Submittals [60 h] |
| SD-CS-L5-452 |  | Review & Approval of SD of Doors & Windows at L5 | 30d | 2015-08-13 | 2015-09-16 | SD-CS-L5-442 SS+10d, SD-CS-L5-442 FF+10d | 128d | 26d | Shop Drawings Approval [40 h] |
|  | 10 | **Level 6 Floor - Shop drawings** |  | 2015-08-05 | 2015-09-23 |  |  |  |  |
| SD-CS-L6-462 |  | Preparation & Submittals of SD of Doors & Windows at L6 | 30d | 2015-08-05 | 2015-09-08 | SD-CS-L5-442 SS+3d | 133d | 0d | Shop Drawings Submittals [60 h] |
| SD-CS-L6-472 |  | Review & Approval of SD of Doors & Windows at L6 | 30d | 2015-08-17 | 2015-09-23 | SD-CS-L6-462 SS+10d, SD-CS-L6-462 FF+10d | 133d | 31d | Shop Drawings Approval [40 h] |
|  | 11 | **Level 7 Floor - Shop drawings** |  | 2015-08-09 | 2015-09-27 |  |  |  |  |
| SD-CS-L7-482 |  | Preparation & Submittals of SD of Doors & Windows at L7 | 30d | 2015-08-09 | 2015-09-12 | SD-CS-L6-462 SS+3d | 138d | 0d | Shop Drawings Submittals [60 h] |
| SD-CS-L7-492 |  | Review & Approval of SD of Doors & Windows at L7 | 30d | 2015-08-20 | 2015-09-27 | SD-CS-L7-482 SS+10d, SD-CS-L7-482 FF+10d | 138d | 36d | Shop Drawings Approval [40 h] |
|  | 12 | **Level 8 Floor - Shop drawings** |  | 2015-08-12 | 2015-09-30 |  |  |  |  |
| SD-CS-L8-502 |  | Preparation & Submittals of SD of Doors & Windows at L8 | 30d | 2015-08-12 | 2015-09-15 | SD-CS-L7-482 SS+3d | 143d | 0d | Shop Drawings Submittals [60 h] |
| SD-CS-L8-512 |  | Review & Approval of SD of Doors & Windows at L8 | 30d | 2015-08-24 | 2015-09-30 | SD-CS-L8-502 SS+10d, SD-CS-L8-502 FF+10d | 143d | 41d | Shop Drawings Approval [40 h] |
|  | 13 | **Level 9 Floor - Shop drawings** |  | 2015-08-16 | 2015-10-04 |  |  |  |  |
| SD-CS-L9-522 |  | Preparation & Submittals of SD of Doors & Windows at L9 | 30d | 2015-08-16 | 2015-09-19 | SD-CS-L8-502 SS+3d | 148d | 0d | Shop Drawings Submittals [60 h] |
| SD-CS-L9-532 |  | Review & Approval of SD of Doors & Windows at L9 | 30d | 2015-08-27 | 2015-10-04 | SD-CS-L9-522 SS+10d, SD-CS-L9-522 FF+10d | 148d | 46d | Shop Drawings Approval [40 h] |
|  | 14 | **Level 10 Floor - Shop drawings** |  | 2015-08-19 | 2015-10-07 |  |  |  |  |
| SD-CS-L10-542 |  | Preparation & Submittals of SD of Doors & Windows at L10 | 30d | 2015-08-19 | 2015-09-26 | SD-CS-L9-522 SS+3d | 153d | 0d | Shop Drawings Submittals [60 h] |
| SD-CS-L10-552 |  | Review & Approval of SD of Doors & Windows at L10 | 30d | 2015-08-31 | 2015-10-07 | SD-CS-L10-542 SS+10d, SD-CS-L10-542 FF+10d | 153d | 51d | Shop Drawings Approval [40 h] |
|  | 15 | **Level 11 Floor - Shop drawings** |  | 2015-08-23 | 2015-10-11 |  |  |  |  |
| SD-CS-L11-562 |  | Preparation & Submittals of SD of Doors & Windows at L11 | 30d | 2015-08-23 | 2015-09-29 | SD-CS-L10-542 SS+3d | 158d | 0d | Shop Drawings Submittals [60 h] |
| SD-CS-L11-572 |  | Review & Approval of SD of Doors & Windows at L11 | 30d | 2015-09-03 | 2015-10-11 | SD-CS-L11-562 SS+10d, SD-CS-L11-562 FF+10d | 158d | 56d | Shop Drawings Approval [40 h] |

| ID | WBS | Activity | Duration | Start | Finish | Predecessors | Total float | Free float | Resources |
| --- | --- | --- | --- | --- | --- | --- | --- | --- | --- |
|  | 16 | **Level 12 Floor - Shop drawings** |  | 2015-08-26 | 2015-10-14 |  |  |  |  |
| SD-CS-L12-582 |  | Preparation & Submittals of SD of Doors & Windows at L12 | 30d | 2015-08-26 | 2015-10-03 | SD-CS-L11-562 SS+3d | 163d | 0d | Shop Drawings Submittals [60 h] |
| SD-CS-L12-592 |  | Review & Approval of SD of Doors & Windows at L12 | 30d | 2015-09-07 | 2015-10-14 | SD-CS-L12-582 SS+10d, SD-CS-L12-582 FF+10d | 163d | 61d | Shop Drawings Approval [40 h] |
|  | 17 | **Level 13 Floor - Shop drawings** |  | 2015-08-30 | 2015-10-18 |  |  |  |  |
| SD-CS-L13-602 |  | Preparation & Submittals of SD of Doors & Windows at L13 | 30d | 2015-08-30 | 2015-10-06 | SD-CS-L12-582 SS+3d | 168d | 0d | Shop Drawings Submittals [60 h] |
| SD-CS-L13-612 |  | Review & Approval of SD of Doors & Windows at L13 | 30d | 2015-09-10 | 2015-10-18 | SD-CS-L13-602 SS+10d, SD-CS-L13-602 FF+10d | 168d | 66d | Shop Drawings Approval [40 h] |
|  | 18 | **Level 14 Floor - Shop drawings** |  | 2015-09-02 | 2015-10-21 |  |  |  |  |
| SD-CS-L14-622 |  | Preparation & Submittals of SD of Doors & Windows at L14 | 30d | 2015-09-02 | 2015-10-10 | SD-CS-L13-602 SS+3d | 173d | 0d | Shop Drawings Submittals [60 h] |
| SD-CS-L14-632 |  | Review & Approval of SD of Doors & Windows at L14 | 30d | 2015-09-14 | 2015-10-21 | SD-CS-L14-622 SS+10d, SD-CS-L14-622 FF+10d | 173d | 71d | Shop Drawings Approval [40 h] |
|  | 19 | **Level 15 Floor - Shop drawings** |  | 2015-09-06 | 2015-10-25 |  |  |  |  |
| SD-CS-L15-642 |  | Preparation & Submittals of SD of Doors & Windows at L15 | 30d | 2015-09-06 | 2015-10-13 | SD-CS-L14-622 SS+3d | 178d | 0d | Shop Drawings Submittals [60 h] |
| SD-CS-L15-652 |  | Review & Approval of SD of Doors & Windows at L15 | 30d | 2015-09-17 | 2015-10-25 | SD-CS-L15-642 SS+10d, SD-CS-L15-642 FF+10d | 178d | 76d | Shop Drawings Approval [40 h] |
|  | 20 | **Level 16 Floor - Shop drawings** |  | 2015-09-09 | 2015-10-28 |  |  |  |  |
| SD-CS-L16-662 |  | Preparation & Submittals of SD of Doors & Windows at L16 | 30d | 2015-09-09 | 2015-10-17 | SD-CS-L15-642 SS+3d | 183d | 0d | Shop Drawings Submittals [60 h] |
| SD-CS-L16-672 |  | Review & Approval of SD of Doors & Windows at L16 | 30d | 2015-09-24 | 2015-10-28 | SD-CS-L16-662 SS+10d, SD-CS-L16-662 FF+10d | 183d | 81d | Shop Drawings Approval [40 h] |
|  | 21 | **Level 17 Floor - Shop drawings** |  | 2015-09-13 | 2015-11-01 |  |  |  |  |
| SD-CS-L17-1442 |  | Preparation & Submittals of SD of Doors & Windows at L17 | 30d | 2015-09-13 | 2015-10-20 | SD-CS-L16-662 SS+3d | 188d | 0d | Shop Drawings Submittals [60 h] |
| SD-CS-L17-1452 |  | Review & Approval of SD of Doors & Windows at L17 | 30d | 2015-09-28 | 2015-11-01 | SD-CS-L17-1442 SS+10d, SD-CS-L17-1442 FF+10d | 188d | 86d | Shop Drawings Approval [40 h] |
|  | 22 | **Level 18 Floor - Shop drawings** |  | 2015-09-16 | 2015-11-04 |  |  |  |  |
| SD-CS-L18-702 |  | Preparation & Submittals of SD of Doors & Windows at L18 | 30d | 2015-09-16 | 2015-10-24 | SD-CS-L17-1442 SS+3d | 193d | 0d | Shop Drawings Submittals [60 h] |
| SD-CS-L18-712 |  | Review & Approval of SD of Doors & Windows at L18 | 30d | 2015-10-01 | 2015-11-04 | SD-CS-L18-702 SS+10d, SD-CS-L18-702 FF+10d | 193d | 91d | Shop Drawings Approval [40 h] |
|  | 23 | **Level 19 Floor - Shop drawings** |  | 2015-09-23 | 2015-11-08 |  |  |  |  |
| SD-CS-L19-722 |  | Preparation & Submittals of SD of Doors & Windows at L19 | 30d | 2015-09-23 | 2015-10-27 | SD-CS-L18-702 SS+3d | 198d | 0d | Shop Drawings Submittals [60 h] |
| SD-CS-L19-732 |  | Review & Approval of SD of Doors & Windows at L19 | 30d | 2015-10-05 | 2015-11-08 | SD-CS-L19-722 SS+10d, SD-CS-L19-722 FF+10d | 198d | 96d | Shop Drawings Approval [40 h] |

| ID | WBS | Activity | Duration | Start | Finish | Predecessors | Total float | Free float | Resources |
| --- | --- | --- | --- | --- | --- | --- | --- | --- | --- |
|  | 24 | **Level 20 Floor - Shop drawings** |  | 2015-09-27 | 2015-11-11 |  |  |  |  |
| SD-CS-L20-742 |  | Preparation & Submittals of SD of Doors & Windows at L20 | 30d | 2015-09-27 | 2015-10-31 | SD-CS-L19-722 SS+3d | 203d | 0d | Shop Drawings Submittals [60 h] |
| SD-CS-L20-752 |  | Review & Approval of SD of Doors & Windows at L20 | 30d | 2015-10-08 | 2015-11-11 | SD-CS-L20-742 SS+10d, SD-CS-L20-742 FF+10d | 203d | 101d | Shop Drawings Approval [40 h] |
|  | 25 | **Level 21 Floor - Shop drawings** |  | 2015-09-30 | 2015-11-15 |  |  |  |  |
| SD-CS-L21-762 |  | Preparation & Submittals of SD of Doors & Windows at L21 | 30d | 2015-09-30 | 2015-11-03 | SD-CS-L20-742 SS+3d | 208d | 0d | Shop Drawings Submittals [60 h] |
| SD-CS-L21-772 |  | Review & Approval of SD of Doors & Windows at L21 | 30d | 2015-10-12 | 2015-11-15 | SD-CS-L21-762 SS+10d, SD-CS-L21-762 FF+10d | 208d | 106d | Shop Drawings Approval [40 h] |
|  | 26 | **Level 22 Floor - Shop drawings** |  | 2015-10-04 | 2015-11-18 |  |  |  |  |
| SD-CS-L22-782 |  | Preparation & Submittals of SD of Doors & Windows at L22 | 30d | 2015-10-04 | 2015-11-07 | SD-CS-L21-762 SS+3d | 213d | 0d | Shop Drawings Submittals [60 h] |
| SD-CS-L22-792 |  | Review & Approval of SD of Doors & Windows at L22 | 30d | 2015-10-15 | 2015-11-18 | SD-CS-L22-782 SS+10d, SD-CS-L22-782 FF+10d | 213d | 111d | Shop Drawings Approval [40 h] |
|  | 27 | **Level 23 Floor - Shop drawings** |  | 2015-10-07 | 2015-11-22 |  |  |  |  |
| SD-CS-L23-802 |  | Preparation & Submittals of SD of Doors & Windows at L23 | 30d | 2015-10-07 | 2015-11-10 | SD-CS-L22-782 SS+3d | 218d | 0d | Shop Drawings Submittals [60 h] |
| SD-CS-L23-812 |  | Review & Approval of SD of Doors & Windows at L23 | 30d | 2015-10-19 | 2015-11-22 | SD-CS-L23-802 SS+10d, SD-CS-L23-802 FF+10d | 218d | 116d | Shop Drawings Approval [40 h] |
|  | 28 | **Level 24 Floor - Shop drawings** |  | 2015-10-11 | 2015-11-25 |  |  |  |  |
| SD-CS-L24-822 |  | Preparation & Submittals of SD of Doors & Windows at L24 | 30d | 2015-10-11 | 2015-11-14 | SD-CS-L23-802 SS+3d | 223d | 0d | Shop Drawings Submittals [60 h] |
| SD-CS-L24-832 |  | Review & Approval of SD of Doors & Windows at L24 | 30d | 2015-10-22 | 2015-11-25 | SD-CS-L24-822 SS+10d, SD-CS-L24-822 FF+10d | 223d | 121d | Shop Drawings Approval [40 h] |
|  | 29 | **Level 25 Floor - Shop drawings** |  | 2015-10-14 | 2015-11-29 |  |  |  |  |
| SD-CS-L25-842 |  | Preparation & Submittals of SD of Doors & Windows at L25 | 30d | 2015-10-14 | 2015-11-17 | SD-CS-L24-822 SS+3d | 225d | 0d | Shop Drawings Submittals [60 h] |
| SD-CS-L25-852 |  | Review & Approval of SD of Doors & Windows at L25 | 30d | 2015-10-26 | 2015-11-29 | SD-CS-L25-842 SS+10d, SD-CS-L25-842 FF+10d | 228d | 97d | Shop Drawings Approval [40 h] |
|  | 30 | **Level 26 Floor - Shop drawings** |  | 2015-10-18 | 2015-12-02 |  |  |  |  |
| SD-CS-L26-862 |  | Preparation & Submittals of SD of Doors & Windows at L26 | 30d | 2015-10-18 | 2015-11-21 | SD-CS-L25-842 SS+3d | 225d | 0d | Shop Drawings Submittals [60 h] |
| SD-CS-L26-872 |  | Review & Approval of SD of Doors & Windows at L26 | 30d | 2015-10-29 | 2015-12-02 | SD-CS-L26-862 SS+10d, SD-CS-L26-862 FF+10d | 233d | 131d | Shop Drawings Approval [40 h] |
|  | 31 | **Level 27 Floor - Shop drawings** |  | 2015-10-21 | 2015-12-06 |  |  |  |  |
| SD-CS-L27-882 |  | Preparation & Submittals of SD of Doors & Windows at L27 | 30d | 2015-10-21 | 2015-11-24 | SD-CS-L26-862 SS+3d | 225d | 0d | Shop Drawings Submittals [60 h] |
| SD-CS-L27-892 |  | Review & Approval of SD of Doors & Windows at L27 | 30d | 2015-11-02 | 2015-12-06 | SD-CS-L27-882 SS+10d, SD-CS-L27-882 FF+10d | 238d | 136d | Shop Drawings Approval [40 h] |

| ID | WBS | Activity | Duration | Start | Finish | Predecessors | Total float | Free float | Resources |
| --- | --- | --- | --- | --- | --- | --- | --- | --- | --- |
|  | 32 | **Level 28 Floor - Shop drawings** |  | 2015-10-25 | 2015-12-09 |  |  |  |  |
| SD-CS-L28-902 |  | Preparation & Submittals of SD of Doors & Windows at L28 | 30d | 2015-10-25 | 2015-11-28 | SD-CS-L27-882 SS+3d | 225d | 0d | Shop Drawings Submittals [60 h] |
| SD-CS-L28-912 |  | Review & Approval of SD of Doors & Windows at L28 | 30d | 2015-11-05 | 2015-12-09 | SD-CS-L28-902 SS+10d, SD-CS-L28-902 FF+10d | 243d | 141d | Shop Drawings Approval [40 h] |
|  | 33 | **Level 29 Floor - Shop drawings** |  | 2015-10-28 | 2015-12-13 |  |  |  |  |
| SD-CS-L29-922 |  | Preparation & Submittals of SD of Doors & Windows at L29 | 30d | 2015-10-28 | 2015-12-01 | SD-CS-L28-902 SS+3d | 225d | 0d | Shop Drawings Submittals [60 h] |
| SD-CS-L29-932 |  | Review & Approval of SD of Doors & Windows at L29 | 30d | 2015-11-09 | 2015-12-13 | SD-CS-L29-922 SS+10d, SD-CS-L29-922 FF+10d | 240d | 85d | Shop Drawings Approval [40 h] |
|  | 34 | **Level 30 Floor - Shop drawings** |  | 2015-11-01 | 2015-12-16 |  |  |  |  |
| SD-CS-L30-942 |  | Preparation & Submittals of SD of Doors & Windows at L30 | 30d | 2015-11-01 | 2015-12-05 | SD-CS-L29-922 SS+3d | 225d | 0d | Shop Drawings Submittals [60 h] |
| SD-CS-L30-952 |  | Review & Approval of SD of Doors & Windows at L30 | 30d | 2015-11-12 | 2015-12-16 | SD-CS-L30-942 SS+10d, SD-CS-L30-942 FF+10d | 253d | 151d | Shop Drawings Approval [40 h] |
|  | 35 | **Level 31 Floor - Shop drawings** |  | 2015-11-04 | 2015-12-21 |  |  |  |  |
| SD-CS-L31-962 |  | Preparation & Submittals of SD of Doors & Windows at L31 | 30d | 2015-11-04 | 2015-12-08 | SD-CS-L30-942 SS+3d | 225d | 0d | Shop Drawings Submittals [60 h] |
| SD-CS-L31-972 |  | Review & Approval of SD of Doors & Windows at L31 | 30d | 2015-11-16 | 2015-12-21 | SD-CS-L31-962 SS+10d, SD-CS-L31-962 FF+10d | 258d | 156d | Shop Drawings Approval [40 h] |
|  | 36 | **Level 32 Floor - Shop drawings** |  | 2015-11-08 | 2015-12-24 |  |  |  |  |
| SD-CS-L32-982 |  | Preparation & Submittals of SD of Doors & Windows at L32 | 30d | 2015-11-08 | 2015-12-12 | SD-CS-L31-962 SS+3d | 225d | 0d | Shop Drawings Submittals [60 h] |
| SD-CS-L32-992 |  | Review & Approval of SD of Doors & Windows at L32 | 30d | 2015-11-19 | 2015-12-24 | SD-CS-L32-982 SS+10d, SD-CS-L32-982 FF+10d | 255d | 153d | Shop Drawings Approval [40 h] |
|  | 37 | **Level 33 Floor - Shop drawings** |  | 2015-11-11 | 2015-12-28 |  |  |  |  |
| SD-CS-L33-1002 |  | Preparation & Submittals of SD of Doors & Windows at L33 | 30d | 2015-11-11 | 2015-12-15 | SD-CS-L32-982 SS+3d | 225d | 0d | Shop Drawings Submittals [60 h] |
| SD-CS-L33-1012 |  | Review & Approval of SD of Doors & Windows at L33 | 30d | 2015-11-23 | 2015-12-28 | SD-CS-L33-1002 SS+10d, SD-CS-L33-1002 FF+10d | 252d | 150d | Shop Drawings Approval [40 h] |
|  | 38 | **Level 34 Floor - Shop drawings** |  | 2015-11-15 | 2015-12-31 |  |  |  |  |
| SD-CS-L34-1022 |  | Preparation & Submittals of SD of Doors & Windows at L34 | 30d | 2015-11-15 | 2015-12-20 | SD-CS-L33-1002 SS+3d | 225d | 0d | Shop Drawings Submittals [60 h] |
| SD-CS-L34-1032 |  | Review & Approval of SD of Doors & Windows at L34 | 30d | 2015-11-26 | 2015-12-31 | SD-CS-L34-1022 SS+10d, SD-CS-L34-1022 FF+10d | 249d | 147d | Shop Drawings Approval [40 h] |
|  | 39 | **Level 35 Floor - Shop drawings** |  | 2015-11-18 | 2016-01-04 |  |  |  |  |
| SD-CS-L35-1042 |  | Preparation & Submittals of SD of Doors & Windows at L35 | 30d | 2015-11-18 | 2015-12-23 | SD-CS-L34-1022 SS+3d | 225d | 0d | Shop Drawings Submittals [60 h] |
| SD-CS-L35-1052 |  | Review & Approval of SD of Doors & Windows at L35 | 30d | 2015-11-30 | 2016-01-04 | SD-CS-L35-1042 SS+10d, SD-CS-L35-1042 FF+10d | 246d | 144d | Shop Drawings Approval [40 h] |

| ID | WBS | Activity | Duration | Start | Finish | Predecessors | Total float | Free float | Resources |
| --- | --- | --- | --- | --- | --- | --- | --- | --- | --- |
|  | 40 | **Level 36 Floor - Shop drawings** |  | 2015-11-22 | 2016-01-07 |  |  |  |  |
| SD-CS-L36-1062 |  | Preparation & Submittals of SD of Doors & Windows at L36 | 30d | 2015-11-22 | 2015-12-27 | SD-CS-L35-1042 SS+3d | 225d | 0d | Shop Drawings Submittals [60 h] |
| SD-CS-L36-1072 |  | Review & Approval of SD of Doors & Windows at L36 | 30d | 2015-12-03 | 2016-01-07 | SD-CS-L36-1062 SS+10d, SD-CS-L36-1062 FF+10d | 243d | 141d | Shop Drawings Approval [40 h] |
|  | 41 | **Level 37 Floor - Shop drawings** |  | 2015-11-25 | 2016-01-11 |  |  |  |  |
| SD-CS-L37-1082 |  | Preparation & Submittals of SD of Doors & Windows at L37 | 30d | 2015-11-25 | 2015-12-30 | SD-CS-L36-1062 SS+3d | 225d | 0d | Shop Drawings Submittals [60 h] |
| SD-CS-L37-1092 |  | Review & Approval of SD of Doors & Windows at L37 | 30d | 2015-12-07 | 2016-01-11 | SD-CS-L37-1082 SS+10d, SD-CS-L37-1082 FF+10d | 240d | 138d | Shop Drawings Approval [40 h] |
|  | 42 | **Level 38 Floor - Shop drawings** |  | 2015-11-29 | 2016-01-14 |  |  |  |  |
| SD-CS-L38-1102 |  | Preparation & Submittals of SD of Doors & Windows at L38 | 30d | 2015-11-29 | 2016-01-03 | SD-CS-L37-1082 SS+3d | 225d | 0d | Shop Drawings Submittals [60 h] |
| SD-CS-L38-1112 |  | Review & Approval of SD of Doors & Windows at L38 | 30d | 2015-12-10 | 2016-01-14 | SD-CS-L38-1102 SS+10d, SD-CS-L38-1102 FF+10d | 237d | 135d | Shop Drawings Approval [40 h] |
|  | 43 | **Level 39 Floor - Shop drawings** |  | 2015-12-02 | 2016-01-18 |  |  |  |  |
| SD-CS-L39-1122 |  | Preparation & Submittals of SD of Doors & Windows at L39 | 30d | 2015-12-02 | 2016-01-06 | SD-CS-L38-1102 SS+3d | 225d | 0d | Shop Drawings Submittals [60 h] |
| SD-CS-L39-1132 |  | Review & Approval of SD of Doors & Windows at L39 | 30d | 2015-12-14 | 2016-01-18 | SD-CS-L39-1122 SS+10d, SD-CS-L39-1122 FF+10d | 234d | 132d | Shop Drawings Approval [40 h] |
|  | 44 | **Level 40 Floor - Shop drawings** |  | 2015-12-06 | 2016-01-21 |  |  |  |  |
| SD-CS-L40-1142 |  | Preparation & Submittals of SD of Doors & Windows at L40 | 30d | 2015-12-06 | 2016-01-10 | SD-CS-L39-1122 SS+3d | 225d | 0d | Shop Drawings Submittals [60 h] |
| SD-CS-L40-1152 |  | Review & Approval of SD of Doors & Windows at L40 | 30d | 2015-12-17 | 2016-01-21 | SD-CS-L40-1142 SS+10d, SD-CS-L40-1142 FF+10d | 231d | 129d | Shop Drawings Approval [40 h] |
|  | 45 | **Level 41 Floor - Shop drawings** |  | 2015-12-09 | 2016-01-25 |  |  |  |  |
| SD-CS-L41-1162 |  | Preparation & Submittals of SD of Doors & Windows at L41 | 30d | 2015-12-09 | 2016-01-13 | SD-CS-L40-1142 SS+3d | 225d | 0d | Shop Drawings Submittals [60 h] |
| SD-CS-L41-1172 |  | Review & Approval of SD of Doors & Windows at L41 | 30d | 2015-12-22 | 2016-01-25 | SD-CS-L41-1162 SS+10d, SD-CS-L41-1162 FF+10d | 228d | 126d | Shop Drawings Approval [40 h] |
|  | 46 | **Level 42 Floor - Shop drawings** |  | 2015-12-13 | 2016-01-28 |  |  |  |  |
| SD-CS-L42-1182 |  | Preparation & Submittals of SD of Doors & Windows at L42 | 30d | 2015-12-13 | 2016-01-17 | SD-CS-L41-1162 SS+3d | 225d | 0d | Shop Drawings Submittals [60 h] |
| SD-CS-L42-1192 |  | Review & Approval of SD of Doors & Windows at L42 | 30d | 2015-12-26 | 2016-01-28 | SD-CS-L42-1182 SS+10d, SD-CS-L42-1182 FF+10d | 233d | 131d | Shop Drawings Approval [40 h] |
|  | 47 | **Level 43 Floor - Shop drawings** |  | 2015-12-16 | 2016-02-01 |  |  |  |  |
| SD-CS-L43-1202 |  | Preparation & Submittals of SD of Doors & Windows at L43 | 30d | 2015-12-16 | 2016-01-20 | SD-CS-L42-1182 SS+3d | 225d | 0d | Shop Drawings Submittals [60 h] |
| SD-CS-L43-1212 |  | Review & Approval of SD of Doors & Windows at L43 | 30d | 2015-12-29 | 2016-02-01 | SD-CS-L43-1202 SS+10d, SD-CS-L43-1202 FF+10d | 230d | 128d | Shop Drawings Approval [40 h] |

| ID | WBS | Activity | Duration | Start | Finish | Predecessors | Total float | Free float | Resources |
| --- | --- | --- | --- | --- | --- | --- | --- | --- | --- |
|  | 48 | **Level 44 Floor - Shop drawings** |  | 2015-12-21 | 2016-02-04 |  |  |  |  |
| SD-CS-L44-1222 |  | Preparation & Submittals of SD of Doors & Windows at L44 | 30d | 2015-12-21 | 2016-01-24 | SD-CS-L43-1202 SS+3d | 225d | 0d | Shop Drawings Submittals [60 h] |
| SD-CS-L44-1232 |  | Review & Approval of SD of Doors & Windows at L44 | 30d | 2016-01-02 | 2016-02-04 | SD-CS-L44-1222 SS+10d, SD-CS-L44-1222 FF+10d | 227d | 125d | Shop Drawings Approval [40 h] |
|  | 49 | **Level 45 Floor - Shop drawings** |  | 2015-12-22 | 2016-02-06 |  |  |  |  |
| SD-CS-L45-1242 |  | Preparation & Submittals of SD of Doors & Windows at L45 | 30d | 2015-12-22 | 2016-01-25 | SD-CS-L44-1222 SS+1d | 225d | 0d | Shop Drawings Submittals [60 h] |
| SD-CS-L45-1252 |  | Review & Approval of SD of Doors & Windows at L45 | 30d | 2016-01-03 | 2016-02-06 | SD-CS-L45-1242 SS+10d, SD-CS-L45-1242 FF+10d | 226d | 124d | Shop Drawings Approval [40 h] |
|  | 50 | **Level 46 Floor - Shop drawings** |  | 2015-12-23 | 2016-02-07 |  |  |  |  |
| SD-CS-L46-1262 |  | Preparation & Submittals of SD of Doors & Windows at L46 | 30d | 2015-12-23 | 2016-01-26 | SD-CS-L45-1242 SS+1d | 225d | 0d | Shop Drawings Submittals [60 h] |
| SD-CS-L46-1272 |  | Review & Approval of SD of Doors & Windows at L46 | 30d | 2016-01-04 | 2016-02-07 | SD-CS-L46-1262 SS+10d, SD-CS-L46-1262 FF+10d | 225d | 123d | Shop Drawings Approval [40 h] |
|  | 53 | **Level 47 Floor - Shop drawings** |  | 2015-12-24 | 2016-02-08 |  |  |  |  |
| SD-CS-L47-1282 |  | Preparation & Submittals of SD of Doors & Windows at L47 | 30d | 2015-12-24 | 2016-01-27 | SD-CS-L46-1262 SS+1d | 230d | 0d | Shop Drawings Submittals [60 h] |
| SD-CS-L47-1292 |  | Review & Approval of SD of Doors & Windows at L47 | 30d | 2016-01-05 | 2016-02-08 | SD-CS-L47-1282 SS+10d, SD-CS-L47-1282 FF+10d | 232d | 130d | Shop Drawings Approval [40 h] |
|  | 51 | **Level 48 Floor - Shop drawings** |  | 2015-12-26 | 2016-02-09 |  |  |  |  |
| SD-CS-L48-1302 |  | Preparation & Submittals of SD of Doors & Windows at L48 | 30d | 2015-12-26 | 2016-01-28 | SD-CS-L47-1282 SS+1d | 230d | 0d | Shop Drawings Submittals [60 h] |
| SD-CS-L48-1312 |  | Review & Approval of SD of Doors & Windows at L48 | 30d | 2016-01-06 | 2016-02-09 | SD-CS-L48-1302 SS+10d, SD-CS-L48-1302 FF+10d | 231d | 129d | Shop Drawings Approval [40 h] |
|  | 52 | **Level 49 Floor - Shop drawings** |  | 2015-12-27 | 2016-02-11 |  |  |  |  |
| SD-CS-L49-1322 |  | Preparation & Submittals of SD of Doors & Windows at L49 | 30d | 2015-12-27 | 2016-01-30 | SD-CS-L48-1302 SS+1d | 230d | 0d | Shop Drawings Submittals [60 h] |
| SD-CS-L49-1332 |  | Review & Approval of SD of Doors & Windows at L49 | 30d | 2016-01-07 | 2016-02-11 | SD-CS-L49-1322 SS+10d, SD-CS-L49-1322 FF+10d | 230d | 128d | Shop Drawings Approval [40 h] |
|  | 54 | **Level 50 Floor - Shop drawings** |  | 2015-12-28 | 2016-02-13 |  |  |  |  |
| SD-CS-L50-1342 |  | Preparation & Submittals of SD of Doors & Windows at L50 | 30d | 2015-12-28 | 2016-01-31 | SD-CS-L49-1322 SS+1d | 232d | 0d | Shop Drawings Submittals [60 h] |
| SD-CS-L50-1352 |  | Review & Approval of SD of Doors & Windows at L50 | 30d | 2016-01-09 | 2016-02-13 | SD-CS-L50-1342 SS+10d, SD-CS-L50-1342 FF+10d | 232d | 127d | Shop Drawings Approval [40 h] |
|  | 55 | **Level 51 Floor - Shop drawings** |  | 2015-12-29 | 2016-02-14 |  |  |  |  |
| SD-CS-L51-1982 |  | Preparation & Submittals of SD of Doors & Windows at L51 | 30d | 2015-12-29 | 2016-02-01 | SD-CS-L50-1342 SS+1d | 247d | 0d | Shop Drawings Submittals [60 h] |
| SD-CS-L51-1992 |  | Review & Approval of SD of Doors & Windows at L51 | 30d | 2016-01-10 | 2016-02-14 | SD-CS-L51-1982 SS+10d, SD-CS-L51-1982 FF+10d | 247d | 134d | Shop Drawings Approval [40 h] |

| ID | WBS | Activity | Duration | Start | Finish | Predecessors | Total float | Free float | Resources |
| --- | --- | --- | --- | --- | --- | --- | --- | --- | --- |
|  | 2 | **MEP** |  | 2014-10-14 | 2016-03-21 |  |  |  |  |
|  | 3 | **Electrical - Drawings** |  | 2014-11-03 | 2016-01-17 |  |  |  |  |
|  | R | **Basement 3 Floor level - Shop drawings** |  | 2014-11-03 | 2014-12-20 |  |  |  |  |
| SD-CS-B3-242 |  | Preparation & Submittals of SD of Electrical at B3 | 30d | 2014-11-03 | 2014-12-07 | PQ-CS-C-412 | 11d | 0d | Shop Drawings Submittals [60 h] |
| SD-CS-B3-252 |  | Review & Approval of SD of Electrical at B3 | 30d | 2014-11-15 | 2014-12-20 | SD-CS-B3-242 SS+10d, SD-CS-B3-242 FF+10d | 14d | 9d | Shop Drawings Approval [40 h] |
|  | 1 | **Basement 2 Floor level - Shop drawings** |  | 2014-11-06 | 2014-12-23 |  |  |  |  |
| SD-CS-B3-222 |  | Preparation & Submittals of SD of Electrical at B2 | 30d | 2014-11-06 | 2014-12-10 | SD-CS-B3-242 SS+3d, PQ-CS-C-412 | 11d | 0d | Shop Drawings Submittals [60 h] |
| SD-CS-B3-232 |  | Review & Approval of SD of Electrical at B2 | 30d | 2014-11-18 | 2014-12-23 | SD-CS-B3-222 SS+10d, SD-CS-B3-222 FF+10d | 11d | 6d | Shop Drawings Approval [40 h] |
|  | 2 | **Basement 1 Floor level - Shop drawings** |  | 2014-11-10 | 2014-12-27 |  |  |  |  |
| SD-CS-B2-202 |  | Preparation & Submittals of SD of Electrical at B1 | 30d | 2014-11-10 | 2014-12-14 | SD-CS-B3-222 SS+3d, PQ-CS-C-412 | 18d | 0d | Shop Drawings Submittals [60 h] |
| SD-CS-B2-212 |  | Review & Approval of SD of Electrical at B1 | 30d | 2014-11-22 | 2014-12-27 | SD-CS-B2-202 SS+10d, SD-CS-B2-202 FF+10d | 152d | 0d | Shop Drawings Approval [40 h] |
|  | 3 | **Ground Floor level - Shop drawings** |  | 2014-11-17 | 2015-01-03 |  |  |  |  |
| SD-CS-B1-202 |  | Preparation & Submittals of SD of Electrical at GF | 30d | 2014-11-17 | 2014-12-22 | SD-CS-B2-202 SS+6d, G-CD-003 FF | 18d | 0d | Shop Drawings Submittals [60 h] |
| SD-CS-B1-212 |  | Review & Approval of SD of Electrical at GF | 30d | 2014-11-29 | 2015-01-03 | SD-CS-B1-202 SS+10d, SD-CS-B1-202 FF+10d | 182d | 0d | Shop Drawings Approval [40 h] |
|  | 4 | **Mezzanine Floor level - Shop drawings** |  | 2014-11-24 | 2015-01-10 |  |  |  |  |
| SD-CS-GF-202 |  | Preparation & Submittals of SD of Electrical at ML | 30d | 2014-11-24 | 2014-12-29 | SD-CS-B1-202 SS+6d | 18d | 0d | Shop Drawings Submittals [60 h] |
| SD-CS-GF-212 |  | Review & Approval of SD of Electrical at ML | 30d | 2014-12-06 | 2015-01-10 | SD-CS-GF-202 SS+10d, SD-CS-GF-202 FF+10d | 18d | 9d | Shop Drawings Approval [40 h] |
|  | 5 | **Level 1 Floor - Shop drawings** |  | 2014-12-01 | 2015-01-17 |  |  |  |  |
| SD-CS-L1-222 |  | Preparation & Submittals of SD of Electrical at L1 | 30d | 2014-12-01 | 2015-01-05 | SD-CS-GF-202 SS+6d | 19d | 0d | Shop Drawings Submittals [60 h] |
| SD-CS-L1-232 |  | Review & Approval of SD of Electrical at L1 | 30d | 2014-12-13 | 2015-01-17 | SD-CS-L1-222 SS+10d, SD-CS-L1-222 FF+10d | 19d | 18d | Shop Drawings Approval [40 h] |
|  | 6 | **Level 2 Floor - Shop drawings** |  | 2014-12-01 | 2015-01-17 |  |  |  |  |
| SD-CS-L2-242 |  | Preparation & Submittals of SD of Electrical at L2 | 30d | 2014-12-01 | 2015-01-05 | SD-CS-GF-202 SS+6d | 33d | 0d | Shop Drawings Submittals [60 h] |
| SD-CS-L2-252 |  | Review & Approval of SD of Electrical at L2 | 30d | 2014-12-13 | 2015-01-17 | SD-CS-L2-242 SS+10d, SD-CS-L2-242 FF+10d | 33d | 30d | Shop Drawings Approval [40 h] |
|  | 7 | **Level 3 Floor - Shop drawings** |  | 2014-12-08 | 2015-01-24 |  |  |  |  |
| SD-CS-L3-262 |  | Preparation & Submittals of SD of Electrical at L3 | 30d | 2014-12-08 | 2015-01-12 | SD-CS-L2-242 SS+6d | 34d | 0d | Shop Drawings Submittals [60 h] |
| SD-CS-L3-272 |  | Review & Approval of SD of Electrical at L3 | 30d | 2014-12-21 | 2015-01-24 | SD-CS-L3-262 SS+10d, SD-CS-L3-262 FF+10d | 34d | 33d | Shop Drawings Approval [40 h] |

| ID | WBS | Activity | Duration | Start | Finish | Predecessors | Total float | Free float | Resources |
| --- | --- | --- | --- | --- | --- | --- | --- | --- | --- |
|  | 8 | **Level 4 Floor - Shop drawings** |  | 2014-12-15 | 2015-01-31 |  |  |  |  |
| SD-CS-L4-1282 |  | Preparation & Submittals of SD of Electrical at L4 | 30d | 2014-12-15 | 2015-01-19 | SD-CS-L3-262 SS+6d | 35d | 0d | Shop Drawings Submittals [60 h] |
| SD-CS-L4-1292 |  | Review & Approval of SD of Electrical at L4 | 30d | 2014-12-28 | 2015-01-31 | SD-CS-L4-1282 SS+10d, SD-CS-L4-1282 FF+10d | 35d | 34d | Shop Drawings Approval [40 h] |
|  | 9 | **Level 5 Floor - Shop drawings** |  | 2014-12-23 | 2015-02-07 |  |  |  |  |
| SD-CS-L5-302 |  | Preparation & Submittals of SD of Electrical at L5 | 30d | 2014-12-23 | 2015-01-26 | SD-CS-L4-1282 SS+6d | 36d | 0d | Shop Drawings Submittals [60 h] |
| SD-CS-L5-312 |  | Review & Approval of SD of Electrical at L5 | 30d | 2015-01-04 | 2015-02-07 | SD-CS-L5-302 SS+10d, SD-CS-L5-302 FF+10d | 36d | 35d | Shop Drawings Approval [40 h] |
|  | 10 | **Level 6 Floor - Shop drawings** |  | 2014-12-30 | 2015-02-15 |  |  |  |  |
| SD-CS-L6-322 |  | Preparation & Submittals of SD of Electrical at L6 | 30d | 2014-12-30 | 2015-02-02 | SD-CS-L5-302 SS+6d | 37d | 0d | Shop Drawings Submittals [60 h] |
| SD-CS-L6-332 |  | Review & Approval of SD of Electrical at L6 | 30d | 2015-01-11 | 2015-02-15 | SD-CS-L6-322 SS+10d, SD-CS-L6-322 FF+10d | 37d | 36d | Shop Drawings Approval [40 h] |
|  | 11 | **Level 7 Floor - Shop drawings** |  | 2015-01-06 | 2015-02-22 |  |  |  |  |
| SD-CS-L7-342 |  | Preparation & Submittals of SD of Electrical at L7 | 30d | 2015-01-06 | 2015-02-09 | SD-CS-L6-322 SS+6d | 38d | 0d | Shop Drawings Submittals [60 h] |
| SD-CS-L7-352 |  | Review & Approval of SD of Electrical at L7 | 30d | 2015-01-18 | 2015-02-22 | SD-CS-L7-342 SS+10d, SD-CS-L7-342 FF+10d | 38d | 37d | Shop Drawings Approval [40 h] |
|  | 12 | **Level 8 Floor - Shop drawings** |  | 2015-01-13 | 2015-03-01 |  |  |  |  |
| SD-CS-L8-362 |  | Preparation & Submittals of SD of Electrical at L8 | 30d | 2015-01-13 | 2015-02-17 | SD-CS-L7-342 SS+6d | 39d | 0d | Shop Drawings Submittals [60 h] |
| SD-CS-L8-372 |  | Review & Approval of SD of Electrical at L8 | 30d | 2015-01-25 | 2015-03-01 | SD-CS-L8-362 SS+10d, SD-CS-L8-362 FF+10d | 39d | 38d | Shop Drawings Approval [40 h] |
|  | 13 | **Level 9 Floor - Shop drawings** |  | 2015-01-20 | 2015-03-08 |  |  |  |  |
| SD-CS-L9-382 |  | Preparation & Submittals of SD of Electrical at L9 | 30d | 2015-01-20 | 2015-02-24 | SD-CS-L8-362 SS+6d | 40d | 0d | Shop Drawings Submittals [60 h] |
| SD-CS-L9-392 |  | Review & Approval of SD of Electrical at L9 | 30d | 2015-02-01 | 2015-03-08 | SD-CS-L9-382 SS+10d, SD-CS-L9-382 FF+10d | 40d | 39d | Shop Drawings Approval [40 h] |
|  | 14 | **Level 10 Floor - Shop drawings** |  | 2015-01-27 | 2015-03-15 |  |  |  |  |
| SD-CS-L10-402 |  | Preparation & Submittals of SD of Electrical at L10 | 30d | 2015-01-27 | 2015-03-03 | SD-CS-L9-382 SS+6d | 41d | 0d | Shop Drawings Submittals [60 h] |
| SD-CS-L10-412 |  | Review & Approval of SD of Electrical at L10 | 30d | 2015-02-08 | 2015-03-15 | SD-CS-L10-402 SS+10d, SD-CS-L10-402 FF+10d | 41d | 40d | Shop Drawings Approval [40 h] |
|  | 15 | **Level 11 Floor - Shop drawings** |  | 2015-02-03 | 2015-03-22 |  |  |  |  |
| SD-CS-L11-422 |  | Preparation & Submittals of SD of Electrical at L11 | 30d | 2015-02-03 | 2015-03-10 | SD-CS-L10-402 SS+6d | 42d | 0d | Shop Drawings Submittals [60 h] |
| SD-CS-L11-432 |  | Review & Approval of SD of Electrical at L11 | 30d | 2015-02-16 | 2015-03-22 | SD-CS-L11-422 SS+10d, SD-CS-L11-422 FF+10d | 42d | 41d | Shop Drawings Approval [40 h] |

| ID | WBS | Activity | Duration | Start | Finish | Predecessors | Total float | Free float | Resources |
| --- | --- | --- | --- | --- | --- | --- | --- | --- | --- |
|  | 16 | **Level 12 Floor - Shop drawings** |  | 2015-02-11 | 2015-03-29 |  |  |  |  |
| SD-CS-L12-442 |  | Preparation & Submittals of SD of Electrical at L12 | 30d | 2015-02-11 | 2015-03-17 | SD-CS-L11-422 SS+6d | 43d | 0d | Shop Drawings Submittals [60 h] |
| SD-CS-L12-452 |  | Review & Approval of SD of Electrical at L12 | 30d | 2015-02-23 | 2015-03-29 | SD-CS-L12-442 SS+10d, SD-CS-L12-442 FF+10d | 43d | 42d | Shop Drawings Approval [40 h] |
|  | 17 | **Level 13 Floor - Shop drawings** |  | 2015-02-18 | 2015-04-05 |  |  |  |  |
| SD-CS-L13-462 |  | Preparation & Submittals of SD of Electrical at L13 | 30d | 2015-02-18 | 2015-03-24 | SD-CS-L12-442 SS+6d | 44d | 0d | Shop Drawings Submittals [60 h] |
| SD-CS-L13-472 |  | Review & Approval of SD of Electrical at L13 | 30d | 2015-03-02 | 2015-04-05 | SD-CS-L13-462 SS+10d, SD-CS-L13-462 FF+10d | 44d | 43d | Shop Drawings Approval [40 h] |
|  | 18 | **Level 14 Floor - Shop drawings** |  | 2015-02-25 | 2015-04-12 |  |  |  |  |
| SD-CS-L14-482 |  | Preparation & Submittals of SD of Electrical at L14 | 30d | 2015-02-25 | 2015-03-31 | SD-CS-L13-462 SS+6d | 45d | 0d | Shop Drawings Submittals [60 h] |
| SD-CS-L14-492 |  | Review & Approval of SD of Electrical at L14 | 30d | 2015-03-09 | 2015-04-12 | SD-CS-L14-482 SS+10d, SD-CS-L14-482 FF+10d | 45d | 44d | Shop Drawings Approval [40 h] |
|  | 19 | **Level 15 Floor - Shop drawings** |  | 2015-03-04 | 2015-04-19 |  |  |  |  |
| SD-CS-L15-502 |  | Preparation & Submittals of SD of Electrical at L15 | 30d | 2015-03-04 | 2015-04-07 | SD-CS-L14-482 SS+6d | 46d | 0d | Shop Drawings Submittals [60 h] |
| SD-CS-L15-512 |  | Review & Approval of SD of Electrical at L15 | 30d | 2015-03-16 | 2015-04-19 | SD-CS-L15-502 SS+10d, SD-CS-L15-502 FF+10d | 46d | 45d | Shop Drawings Approval [40 h] |
|  | 20 | **Level 16 Floor - Shop drawings** |  | 2015-03-11 | 2015-04-26 |  |  |  |  |
| SD-CS-L16-522 |  | Preparation & Submittals of SD of Electrical at L16 | 30d | 2015-03-11 | 2015-04-14 | SD-CS-L15-502 SS+6d | 47d | 0d | Shop Drawings Submittals [60 h] |
| SD-CS-L16-532 |  | Review & Approval of SD of Electrical at L16 | 30d | 2015-03-23 | 2015-04-26 | SD-CS-L16-522 SS+10d, SD-CS-L16-522 FF+10d | 47d | 46d | Shop Drawings Approval [40 h] |
|  | 21 | **Level 17 Floor - Shop drawings** |  | 2015-03-18 | 2015-05-03 |  |  |  |  |
| SD-CS-L17-1302 |  | Preparation & Submittals of SD of Electrical at L17 | 30d | 2015-03-18 | 2015-04-21 | SD-CS-L16-522 SS+6d | 48d | 0d | Shop Drawings Submittals [60 h] |
| SD-CS-L17-1312 |  | Review & Approval of SD of Electrical at L17 | 30d | 2015-03-30 | 2015-05-03 | SD-CS-L17-1302 SS+10d, SD-CS-L17-1302 FF+10d | 48d | 47d | Shop Drawings Approval [40 h] |
|  | 22 | **Level 18 Floor - Shop drawings** |  | 2015-03-25 | 2015-05-10 |  |  |  |  |
| SD-CS-L18-562 |  | Preparation & Submittals of SD of Electrical at L18 | 30d | 2015-03-25 | 2015-04-28 | SD-CS-L17-1302 SS+6d | 51d | 0d | Shop Drawings Submittals [60 h] |
| SD-CS-L18-572 |  | Review & Approval of SD of Electrical at L18 | 30d | 2015-04-06 | 2015-05-10 | SD-CS-L18-562 SS+10d, SD-CS-L18-562 FF+10d | 51d | 49d | Shop Drawings Approval [40 h] |
|  | 23 | **Level 19 Floor - Shop drawings** |  | 2015-04-01 | 2015-05-17 |  |  |  |  |
| SD-CS-L19-582 |  | Preparation & Submittals of SD of Electrical at L19 | 30d | 2015-04-01 | 2015-05-05 | SD-CS-L18-562 SS+6d | 52d | 0d | Shop Drawings Submittals [60 h] |
| SD-CS-L19-592 |  | Review & Approval of SD of Electrical at L19 | 30d | 2015-04-13 | 2015-05-17 | SD-CS-L19-582 SS+10d, SD-CS-L19-582 FF+10d | 52d | 51d | Shop Drawings Approval [40 h] |

| ID | WBS | Activity | Duration | Start | Finish | Predecessors | Total float | Free float | Resources |
| --- | --- | --- | --- | --- | --- | --- | --- | --- | --- |
|  | 24 | **Level 20 Floor - Shop drawings** |  | 2015-04-08 | 2015-05-24 |  |  |  |  |
| SD-CS-L20-602 |  | Preparation & Submittals of SD of Electrical Works at L20 | 30d | 2015-04-08 | 2015-05-12 | SD-CS-L19-582 SS+6d | 53d | 0d | Shop Drawings Submittals [60 h] |
| SD-CS-L20-612 |  | Review & Approval of SD of Electrical Works at L20 | 30d | 2015-04-20 | 2015-05-24 | SD-CS-L20-602 SS+10d, SD-CS-L20-602 FF+10d | 53d | 52d | Shop Drawings Approval [40 h] |
|  | 25 | **Level 21 Floor - Shop drawings** |  | 2015-04-15 | 2015-05-31 |  |  |  |  |
| SD-CS-L21-622 |  | Preparation & Submittals of SD of Electrical Works at L21 | 30d | 2015-04-15 | 2015-05-19 | SD-CS-L20-602 SS+6d | 54d | 0d | Shop Drawings Submittals [60 h] |
| SD-CS-L21-632 |  | Review & Approval of SD of Electrical Works at L21 | 30d | 2015-04-27 | 2015-05-31 | SD-CS-L21-622 SS+10d, SD-CS-L21-622 FF+10d | 54d | 53d | Shop Drawings Approval [40 h] |
|  | 26 | **Level 22 Floor - Shop drawings** |  | 2015-04-22 | 2015-06-07 |  |  |  |  |
| SD-CS-L22-642 |  | Preparation & Submittals of SD of Electrical Works at L22 | 30d | 2015-04-22 | 2015-05-26 | SD-CS-L21-622 SS+6d | 55d | 0d | Shop Drawings Submittals [60 h] |
| SD-CS-L22-652 |  | Review & Approval of SD of Electrical Works at L22 | 30d | 2015-05-04 | 2015-06-07 | SD-CS-L22-642 SS+10d, SD-CS-L22-642 FF+10d | 55d | 54d | Shop Drawings Approval [40 h] |
|  | 27 | **Level 23 Floor - Shop drawings** |  | 2015-04-29 | 2015-06-14 |  |  |  |  |
| SD-CS-L23-662 |  | Preparation & Submittals of SD of Electrical Works at L23 | 30d | 2015-04-29 | 2015-06-02 | SD-CS-L22-642 SS+6d | 55d | 0d | Shop Drawings Submittals [60 h] |
| SD-CS-L23-672 |  | Review & Approval of SD of Electrical Works at L23 | 30d | 2015-05-11 | 2015-06-14 | SD-CS-L23-662 SS+10d, SD-CS-L23-662 FF+10d | 55d |  | Shop Drawings Approval [40 h] |
|  | 28 | **Level 24 Floor - Shop drawings** |  | 2015-05-06 | 2015-06-21 |  |  |  |  |
| SD-CS-L24-682 |  | Preparation & Submittals of SD of Electrical Works at L24 | 30d | 2015-05-06 | 2015-06-09 | SD-CS-L23-662 SS+6d | 55d | 0d | Shop Drawings Submittals [60 h] |
| SD-CS-L24-692 |  | Review & Approval of SD of Electrical Works at L24 | 30d | 2015-05-18 | 2015-06-21 | SD-CS-L24-682 SS+10d, SD-CS-L24-682 FF+10d | 55d |  | Shop Drawings Approval [40 h] |
|  | 29 | **Level 25 Floor - Shop drawings** |  | 2015-05-13 | 2015-06-28 |  |  |  |  |
| SD-CS-L25-702 |  | Preparation & Submittals of SD of Electrical Works at L25 | 30d | 2015-05-13 | 2015-06-16 | SD-CS-L24-682 SS+6d | 55d | 0d | Shop Drawings Submittals [60 h] |
| SD-CS-L25-712 |  | Review & Approval of SD of Electrical Works at L25 | 30d | 2015-05-25 | 2015-06-28 | SD-CS-L25-702 SS+10d, SD-CS-L25-702 FF+10d | 55d |  | Shop Drawings Approval [40 h] |
|  | 30 | **Level 26 Floor - Shop drawings** |  | 2015-05-20 | 2015-07-05 |  |  |  |  |
| SD-CS-L26-722 |  | Preparation & Submittals of SD of Electrical Works at L26 | 30d | 2015-05-20 | 2015-06-23 | SD-CS-L25-702 SS+6d | 55d | 0d | Shop Drawings Submittals [60 h] |
| SD-CS-L26-732 |  | Review & Approval of SD of Electrical Works at L26 | 30d | 2015-06-01 | 2015-07-05 | SD-CS-L26-722 SS+10d, SD-CS-L26-722 FF+10d | 55d |  | Shop Drawings Approval [40 h] |
|  | 31 | **Level 27 Floor - Shop drawings** |  | 2015-05-27 | 2015-07-12 |  |  |  |  |
| SD-CS-L27-742 |  | Preparation & Submittals of SD of Electrical Works at L27 | 30d | 2015-05-27 | 2015-06-30 | SD-CS-L26-722 SS+6d | 55d | 0d | Shop Drawings Submittals [60 h] |
| SD-CS-L27-752 |  | Review & Approval of SD of Electrical Works at L27 | 30d | 2015-06-08 | 2015-07-12 | SD-CS-L27-742 SS+10d, SD-CS-L27-742 FF+10d | 55d |  | Shop Drawings Approval [40 h] |

| ID | WBS | Activity | Duration | Start | Finish | Predecessors | Total float | Free float | Resources |
| --- | --- | --- | --- | --- | --- | --- | --- | --- | --- |
|  | 32 | **Level 28 Floor - Shop drawings** |  | 2015-06-03 | 2015-07-21 |  |  |  |  |
| SD-CS-L28-762 |  | Preparation & Submittals of SD of Electrical Works at L28 | 30d | 2015-06-03 | 2015-07-07 | SD-CS-L27-742 SS+6d | 55d | 0d | Shop Drawings Submittals [60 h] |
| SD-CS-L28-772 |  | Review & Approval of SD of Electrical Works at L28 | 30d | 2015-06-15 | 2015-07-21 | SD-CS-L28-762 SS+10d, SD-CS-L28-762 FF+10d | 55d |  | Shop Drawings Approval [40 h] |
|  | 33 | **Level 29 Floor - Shop drawings** |  | 2015-06-10 | 2015-07-28 |  |  |  |  |
| SD-CS-L29-782 |  | Preparation & Submittals of SD of Electrical Works at L29 | 30d | 2015-06-10 | 2015-07-14 | SD-CS-L28-762 SS+6d | 55d | 0d | Shop Drawings Submittals [60 h] |
| SD-CS-L29-792 |  | Review & Approval of SD of Electrical Works at L29 | 30d | 2015-06-22 | 2015-07-28 | SD-CS-L29-782 SS+10d, SD-CS-L29-782 FF+10d | 55d |  | Shop Drawings Approval [40 h] |
|  | 34 | **Level 30 Floor - Shop drawings** |  | 2015-06-17 | 2015-08-04 |  |  |  |  |
| SD-CS-L30-802 |  | Preparation & Submittals of SD of Electrical Works at L30 | 30d | 2015-06-17 | 2015-07-23 | SD-CS-L29-782 SS+6d | 55d | 0d | Shop Drawings Submittals [60 h] |
| SD-CS-L30-812 |  | Review & Approval of SD of Electrical Works at L30 | 30d | 2015-06-29 | 2015-08-04 | SD-CS-L30-802 SS+10d, SD-CS-L30-802 FF+10d | 55d |  | Shop Drawings Approval [40 h] |
|  | 35 | **Level 31 Floor - Shop drawings** |  | 2015-06-24 | 2015-08-11 |  |  |  |  |
| SD-CS-L31-822 |  | Preparation & Submittals of SD of Electrical Works at L31 | 30d | 2015-06-24 | 2015-07-30 | SD-CS-L30-802 SS+6d | 55d | 0d | Shop Drawings Submittals [60 h] |
| SD-CS-L31-832 |  | Review & Approval of SD of Electrical Works at L31 | 30d | 2015-07-06 | 2015-08-11 | SD-CS-L31-822 SS+10d, SD-CS-L31-822 FF+10d | 55d |  | Shop Drawings Approval [40 h] |
|  | 36 | **Level 32 Floor - Shop drawings** |  | 2015-07-01 | 2015-08-18 |  |  |  |  |
| SD-CS-L32-842 |  | Preparation & Submittals of SD of Electrical Works at L32 | 30d | 2015-07-01 | 2015-08-06 | SD-CS-L31-822 SS+6d | 56d | 0d | Shop Drawings Submittals [60 h] |
| SD-CS-L32-852 |  | Review & Approval of SD of Electrical Works at L32 | 30d | 2015-07-13 | 2015-08-18 | SD-CS-L32-842 SS+10d, SD-CS-L32-842 FF+10d | 56d | 55d | Shop Drawings Approval [40 h] |
|  | 37 | **Level 33 Floor - Shop drawings** |  | 2015-07-08 | 2015-08-25 |  |  |  |  |
| SD-CS-L33-862 |  | Preparation & Submittals of SD of Electrical Works at L33 | 30d | 2015-07-08 | 2015-08-13 | SD-CS-L32-842 SS+6d | 58d | 0d | Shop Drawings Submittals [60 h] |
| SD-CS-L33-872 |  | Review & Approval of SD of Electrical Works at L33 | 30d | 2015-07-22 | 2015-08-25 | SD-CS-L33-862 SS+10d, SD-CS-L33-862 FF+10d | 58d | 57d | Shop Drawings Approval [40 h] |
|  | 38 | **Level 34 Floor - Shop drawings** |  | 2015-07-18 | 2015-09-01 |  |  |  |  |
| SD-CS-L34-882 |  | Preparation & Submittals of SD of Electrical Works at L34 | 30d | 2015-07-18 | 2015-08-20 | SD-CS-L33-862 SS+6d | 58d | 0d | Shop Drawings Submittals [60 h] |
| SD-CS-L34-892 |  | Review & Approval of SD of Electrical Works at L34 | 30d | 2015-07-29 | 2015-09-01 | SD-CS-L34-882 SS+10d, SD-CS-L34-882 FF+10d | 58d |  | Shop Drawings Approval [40 h] |
|  | 39 | **Level 35 Floor - Shop drawings** |  | 2015-07-25 | 2015-09-08 |  |  |  |  |
| SD-CS-L35-902 |  | Preparation & Submittals of SD of Electrical Works at L35 | 30d | 2015-07-25 | 2015-08-27 | SD-CS-L34-882 SS+6d | 58d | 0d | Shop Drawings Submittals [60 h] |
| SD-CS-L35-912 |  | Review & Approval of SD of Electrical Works at L35 | 30d | 2015-08-05 | 2015-09-08 | SD-CS-L35-902 SS+10d, SD-CS-L35-902 FF+10d | 58d |  | Shop Drawings Approval [40 h] |

| ID | WBS | Activity | Duration | Start | Finish | Predecessors | Total float | Free float | Resources |
| --- | --- | --- | --- | --- | --- | --- | --- | --- | --- |
|  | 40 | **Level 36 Floor - Shop drawings** |  | 2015-08-01 | 2015-09-15 |  |  |  |  |
| SD-CS-L36-922 |  | Preparation & Submittals of SD of Electrical Works at L36 | 30d | 2015-08-01 | 2015-09-03 | SD-CS-L35-902 SS+6d | 58d | 0d | Shop Drawings Submittals [60 h] |
| SD-CS-L36-932 |  | Review & Approval of SD of Electrical Works at L36 | 30d | 2015-08-12 | 2015-09-15 | SD-CS-L36-922 SS+10d, SD-CS-L36-922 FF+10d | 58d |  | Shop Drawings Approval [40 h] |
|  | 41 | **Level 37 Floor - Shop drawings** |  | 2015-08-08 | 2015-09-26 |  |  |  |  |
| SD-CS-L37-942 |  | Preparation & Submittals of SD of Electrical Works at L37 | 30d | 2015-08-08 | 2015-09-10 | SD-CS-L36-922 SS+6d | 58d | 0d | Shop Drawings Submittals [60 h] |
| SD-CS-L37-952 |  | Review & Approval of SD of Electrical Works at L37 | 30d | 2015-08-19 | 2015-09-26 | SD-CS-L37-942 SS+10d, SD-CS-L37-942 FF+10d | 58d |  | Shop Drawings Approval [40 h] |
|  | 42 | **Level 38 Floor - Shop drawings** |  | 2015-08-15 | 2015-10-03 |  |  |  |  |
| SD-CS-L38-962 |  | Preparation & Submittals of SD of Electrical Works at L38 | 30d | 2015-08-15 | 2015-09-17 | SD-CS-L37-942 SS+6d | 58d | 0d | Shop Drawings Submittals [60 h] |
| SD-CS-L38-972 |  | Review & Approval of SD of Electrical Works at L38 | 30d | 2015-08-26 | 2015-10-03 | SD-CS-L38-962 SS+10d, SD-CS-L38-962 FF+10d | 58d |  | Shop Drawings Approval [40 h] |
|  | 43 | **Level 39 Floor - Shop drawings** |  | 2015-08-22 | 2015-10-10 |  |  |  |  |
| SD-CS-L39-982 |  | Preparation & Submittals of SD of Electrical Works at L39 | 30d | 2015-08-22 | 2015-09-28 | SD-CS-L38-962 SS+6d | 58d | 0d | Shop Drawings Submittals [60 h] |
| SD-CS-L39-992 |  | Review & Approval of SD of Electrical Works at L39 | 30d | 2015-09-02 | 2015-10-10 | SD-CS-L39-982 SS+10d, SD-CS-L39-982 FF+10d | 58d |  | Shop Drawings Approval [40 h] |
|  | 44 | **Level 40 Floor - Shop drawings** |  | 2015-08-29 | 2015-10-17 |  |  |  |  |
| SD-CS-L40-1002 |  | Preparation & Submittals of SD of Electrical Works at L40 | 30d | 2015-08-29 | 2015-10-05 | SD-CS-L39-982 SS+6d | 58d | 0d | Shop Drawings Submittals [60 h] |
| SD-CS-L40-1012 |  | Review & Approval of SD of Electrical Works at L40 | 30d | 2015-09-09 | 2015-10-17 | SD-CS-L40-1002 SS+10d, SD-CS-L40-1002 FF+10d | 58d |  | Shop Drawings Approval [40 h] |
|  | 45 | **Level 41 Floor - Shop drawings** |  | 2015-09-05 | 2015-10-24 |  |  |  |  |
| SD-CS-L41-1022 |  | Preparation & Submittals of SD of Electrical Works at L41 | 30d | 2015-09-05 | 2015-10-12 | SD-CS-L40-1002 SS+6d | 58d | 0d | Shop Drawings Submittals [60 h] |
| SD-CS-L41-1032 |  | Review & Approval of SD of Electrical Works at L41 | 30d | 2015-09-16 | 2015-10-24 | SD-CS-L41-1022 SS+10d, SD-CS-L41-1022 FF+10d | 58d |  | Shop Drawings Approval [40 h] |
|  | 46 | **Level 42 Floor - Shop drawings** |  | 2015-09-12 | 2015-10-31 |  |  |  |  |
| SD-CS-L42-1042 |  | Preparation & Submittals of SD of Electrical Works at L42 | 30d | 2015-09-12 | 2015-10-19 | SD-CS-L41-1022 SS+6d | 58d | 0d | Shop Drawings Submittals [60 h] |
| SD-CS-L42-1052 |  | Review & Approval of SD of Electrical Works at L42 | 30d | 2015-09-27 | 2015-10-31 | SD-CS-L42-1042 SS+10d, SD-CS-L42-1042 FF+10d | 58d |  | Shop Drawings Approval [40 h] |
|  | 47 | **Level 43 Floor - Shop drawings** |  | 2015-09-19 | 2015-11-07 |  |  |  |  |
| SD-CS-L43-1062 |  | Preparation & Submittals of SD of Electrical Works at L43 | 30d | 2015-09-19 | 2015-10-26 | SD-CS-L42-1042 SS+6d | 58d | 0d | Shop Drawings Submittals [60 h] |
| SD-CS-L43-1072 |  | Review & Approval of SD of Electrical Works at L43 | 30d | 2015-10-04 | 2015-11-07 | SD-CS-L43-1062 SS+10d, SD-CS-L43-1062 FF+10d | 58d |  | Shop Drawings Approval [40 h] |

| ID | WBS | Activity | Duration | Start | Finish | Predecessors | Total float | Free float | Resources |
| --- | --- | --- | --- | --- | --- | --- | --- | --- | --- |
|  | 48 | **Level 44 Floor - Shop drawings** |  | 2015-09-29 | 2015-11-14 |  |  |  |  |
| SD-CS-L44-1082 |  | Preparation & Submittals of SD of Electrical Works at L44 | 30d | 2015-09-29 | 2015-11-02 | SD-CS-L43-1062 SS+6d | 58d | 0d | Shop Drawings Submittals [60 h] |
| SD-CS-L44-1092 |  | Review & Approval of SD of Electrical Works at L44 | 30d | 2015-10-11 | 2015-11-14 | SD-CS-L44-1082 SS+10d, SD-CS-L44-1082 FF+10d | 58d |  | Shop Drawings Approval [40 h] |
|  | 49 | **Level 45 Floor - Shop drawings** |  | 2015-10-06 | 2015-11-21 |  |  |  |  |
| SD-CS-L45-1102 |  | Preparation & Submittals of SD of Electrical Works at L45 | 30d | 2015-10-06 | 2015-11-09 | SD-CS-L44-1082 SS+6d | 58d | 0d | Shop Drawings Submittals [60 h] |
| SD-CS-L45-1112 |  | Review & Approval of SD of Electrical Works at L45 | 30d | 2015-10-18 | 2015-11-21 | SD-CS-L45-1102 SS+10d, SD-CS-L45-1102 FF+10d | 58d |  | Shop Drawings Approval [40 h] |
|  | 50 | **Level 46 Floor - Shop drawings** |  | 2015-10-13 | 2015-11-28 |  |  |  |  |
| SD-CS-L46-1122 |  | Preparation & Submittals of SD of Electrical Works at L46 | 30d | 2015-10-13 | 2015-11-16 | SD-CS-L45-1102 SS+6d | 58d | 0d | Shop Drawings Submittals [60 h] |
| SD-CS-L46-1132 |  | Review & Approval of SD of Electrical Works at L46 | 30d | 2015-10-25 | 2015-11-28 | SD-CS-L46-1122 SS+10d, SD-CS-L46-1122 FF+10d | 58d |  | Shop Drawings Approval [40 h] |
|  | 53 | **Level 47 Floor - Shop drawings** |  | 2015-10-20 | 2015-12-05 |  |  |  |  |
| SD-CS-L47-1142 |  | Preparation & Submittals of SD of Electrical Works at L47 | 30d | 2015-10-20 | 2015-11-23 | SD-CS-L46-1122 SS+6d | 58d | 0d | Shop Drawings Submittals [60 h] |
| SD-CS-L47-1152 |  | Review & Approval of SD of Electrical Works at L47 | 30d | 2015-11-01 | 2015-12-05 | SD-CS-L47-1142 SS+10d, SD-CS-L47-1142 FF+10d | 58d |  | Shop Drawings Approval [40 h] |
|  | 51 | **Level 48 Floor - Shop drawings** |  | 2015-10-27 | 2015-12-12 |  |  |  |  |
| SD-CS-L48-1162 |  | Preparation & Submittals of SD of Electrical Works at L48 | 30d | 2015-10-27 | 2015-11-30 | SD-CS-L47-1142 SS+6d | 58d | 0d | Shop Drawings Submittals [60 h] |
| SD-CS-L48-1172 |  | Review & Approval of SD of Electrical Works at L48 | 30d | 2015-11-08 | 2015-12-12 | SD-CS-L48-1162 SS+10d, SD-CS-L48-1162 FF+10d | 58d |  | Shop Drawings Approval [40 h] |
|  | 52 | **Level 49 Floor - Shop drawings** |  | 2015-11-03 | 2015-12-20 |  |  |  |  |
| SD-CS-L49-1182 |  | Preparation & Submittals of SD of Electrical Works at L49 | 30d | 2015-11-03 | 2015-12-07 | SD-CS-L48-1162 SS+6d | 58d | 0d | Shop Drawings Submittals [60 h] |
| SD-CS-L49-1192 |  | Review & Approval of SD of Electrical Works at L49 | 30d | 2015-11-15 | 2015-12-20 | SD-CS-L49-1182 SS+10d, SD-CS-L49-1182 FF+10d | 58d |  | Shop Drawings Approval [40 h] |
|  | 54 | **Level 50 Floor - Shop drawings** |  | 2015-11-10 | 2015-12-27 |  |  |  |  |
| SD-CS-L50-1202 |  | Preparation & Submittals of SD of Electrical Works at L50 | 30d | 2015-11-10 | 2015-12-14 | SD-CS-L49-1182 SS+6d | 59d | 0d | Shop Drawings Submittals [60 h] |
| SD-CS-L50-1212 |  | Review & Approval of SD of Electrical Works at L50 | 30d | 2015-11-22 | 2015-12-27 | SD-CS-L50-1202 SS+10d, SD-CS-L50-1202 FF+10d | 59d |  | Shop Drawings Approval [40 h] |
|  | 55 | **Level 51 Floor - Shop drawings** |  | 2015-11-17 | 2016-01-03 |  |  |  |  |
| SD-CS-L51-1562 |  | Preparation & Submittals of SD of Electrical Works at L51 | 30d | 2015-11-17 | 2015-12-22 | SD-CS-L50-1202 SS+6d | 59d | 0d | Shop Drawings Submittals [60 h] |
| SD-CS-L51-1572 |  | Review & Approval of SD of Electrical Works at L51 | 30d | 2015-11-29 | 2016-01-03 | SD-CS-L51-1562 SS+10d, SD-CS-L51-1562 FF+10d | 60d | 59d | Shop Drawings Approval [40 h] |

| ID | WBS | Activity | Duration | Start | Finish | Predecessors | Total float | Free float | Resources |
| --- | --- | --- | --- | --- | --- | --- | --- | --- | --- |
|  | 56 | **Lower Roof Floor - Shop drawings** |  | 2015-11-24 | 2016-01-10 |  |  |  |  |
| SD-CS-L51-1582 |  | Preparation & Submittals of SD of Electrical Works at Lower Roof | 30d | 2015-11-24 | 2015-12-29 | SD-CS-L51-1562 SS+6d | 59d | 0d | Shop Drawings Submittals [60 h] |
| SD-CS-L51-1592 |  | Review & Approval of SD of Electrical Works at Lower Roof | 30d | 2015-12-06 | 2016-01-10 | SD-CS-L51-1582 SS+10d, SD-CS-L51-1582 FF+10d | 59d |  | Shop Drawings Approval [40 h] |
|  | 57 | **Top Roof Floor - Shop drawings** |  | 2015-12-01 | 2016-01-17 |  |  |  |  |
| SD-CS-L51-1602 |  | Preparation & Submittals of SD of Electrical Works at Top Roof | 30d | 2015-12-01 | 2016-01-05 | SD-CS-L51-1582 SS+6d | 60d | 0d | Shop Drawings Submittals [60 h] |
| SD-CS-L51-1612 |  | Review & Approval of SD of Electrical Works at Top Roof | 30d | 2015-12-13 | 2016-01-17 | SD-CS-L51-1602 SS+10d, SD-CS-L51-1602 FF+10d | 60d | 58d | Shop Drawings Approval [40 h] |
|  | 1 | **HVAC - Drawings** |  | 2014-11-18 | 2015-12-24 |  |  |  |  |
|  | R | **Basement 3 Floor level - Shop drawings** |  | 2014-11-18 | 2015-01-04 |  |  |  |  |
| SD-CS-B3-162 |  | Preparation & Submittals of SD of HVAC at B3 | 30d | 2014-11-18 | 2014-12-23 | PQ-CS-C-452 | 107d | 0d | Shop Drawings Submittals [60 h] |
| SD-CS-B3-172 |  | Review & Approval of SD of HVAC at B3 | 30d | 2014-11-30 | 2015-01-04 | SD-CS-B3-162 SS+10d, SD-CS-B3-162 FF+10d | 306d | 261d | Shop Drawings Approval [40 h] |
|  | 1 | **Basement 2 Floor level - Shop drawings** |  | 2014-11-25 | 2015-01-11 |  |  |  |  |
| SD-CS-B3-142 |  | Preparation & Submittals of SD of HVAC at B2 | 30d | 2014-11-25 | 2014-12-30 | SD-CS-B3-162 SS+6d | 107d | 0d | Shop Drawings Submittals [60 h] |
| SD-CS-B3-152 |  | Review & Approval of SD of HVAC at B2 | 30d | 2014-12-07 | 2015-01-11 | SD-CS-B3-142 SS+10d, SD-CS-B3-142 FF+10d | 296d | 270d | Shop Drawings Approval [40 h] |
|  | 2 | **Basement 1 Floor level - Shop drawings** |  | 2014-12-02 | 2015-01-18 |  |  |  |  |
| SD-CS-B2-162 |  | Preparation & Submittals of SD of HVAC at B1 | 30d | 2014-12-02 | 2015-01-06 | SD-CS-B3-142 SS+6d | 107d | 0d | Shop Drawings Submittals [60 h] |
| SD-CS-B2-172 |  | Review & Approval of SD of HVAC at B1 | 30d | 2014-12-14 | 2015-01-18 | SD-CS-B2-162 SS+10d, SD-CS-B2-162 FF+10d | 311d | 278d | Shop Drawings Approval [40 h] |
|  | 3 | **Ground Floor level - Shop drawings** |  | 2014-12-15 | 2015-01-31 |  |  |  |  |
| SD-CS-B1-162 |  | Preparation & Submittals of SD of HVAC at GF | 30d | 2014-12-15 | 2015-01-19 | SD-CS-B2-162 SS+6d, G-CD-003 | 102d | 0d | Shop Drawings Submittals [60 h] |
| SD-CS-B1-172 |  | Review & Approval of SD of HVAC at GF | 30d | 2014-12-28 | 2015-01-31 | SD-CS-B1-162 SS+10d, SD-CS-B1-162 FF+10d | 127d | 20d | Shop Drawings Approval [40 h] |
|  | 4 | **Mezzanine Floor level - Shop drawings** |  | 2014-12-23 | 2015-02-07 |  |  |  |  |
| SD-CS-GF-162 |  | Preparation & Submittals of SD of HVAC at ML | 30d | 2014-12-23 | 2015-01-26 | SD-CS-B1-162 SS+6d | 102d | 0d | Shop Drawings Submittals [60 h] |
| SD-CS-GF-172 |  | Review & Approval of SD of HVAC at ML | 30d | 2015-01-04 | 2015-02-07 | SD-CS-GF-162 SS+10d, SD-CS-GF-162 FF+10d | 144d | 37d | Shop Drawings Approval [40 h] |
|  | 5 | **Level 1 Floor - Shop drawings** |  | 2014-12-30 | 2015-02-15 |  |  |  |  |
| SD-CS-L1-182 |  | Preparation & Submittals of SD of HVAC at L1 | 30d | 2014-12-30 | 2015-02-02 | SD-CS-GF-162 SS+6d | 142d | 0d | Shop Drawings Submittals [60 h] |
| SD-CS-L1-192 |  | Review & Approval of SD of HVAC at L1 | 30d | 2015-01-11 | 2015-02-15 | SD-CS-L1-182 SS+10d, SD-CS-L1-182 FF+10d | 142d | 31d | Shop Drawings Approval [40 h] |

| ID | WBS | Activity | Duration | Start | Finish | Predecessors | Total float | Free float | Resources |
| --- | --- | --- | --- | --- | --- | --- | --- | --- | --- |
|  | 6 | **Level 2 Floor - Shop drawings** |  | 2014-12-30 | 2015-02-15 |  |  |  |  |
| SD-CS-L2-202 |  | Preparation & Submittals of SD of HVAC at L2 | 30d | 2014-12-30 | 2015-02-02 | SD-CS-GF-162 SS+6d | 102d | 0d | Shop Drawings Submittals [60 h] |
| SD-CS-L2-212 |  | Review & Approval of SD of HVAC at L2 | 30d | 2015-01-11 | 2015-02-15 | SD-CS-L2-202 SS+10d, SD-CS-L2-202 FF+10d | 168d | 54d | Shop Drawings Approval [40 h] |
|  | 7 | **Level 3 Floor - Shop drawings** |  | 2015-01-06 | 2015-02-22 |  |  |  |  |
| SD-CS-L3-222 |  | Preparation & Submittals of SD ofHVAC at L3 | 30d | 2015-01-06 | 2015-02-09 | SD-CS-L2-202 SS+6d | 102d | 0d | Shop Drawings Submittals [60 h] |
| SD-CS-L3-232 |  | Review & Approval of SD of HVAC at L3 | 30d | 2015-01-18 | 2015-02-22 | SD-CS-L3-222 SS+10d, SD-CS-L3-222 FF+10d | 162d | 48d | Shop Drawings Approval [40 h] |
|  | 8 | **Level 4 Floor - Shop drawings** |  | 2015-01-13 | 2015-03-01 |  |  |  |  |
| SD-CS-L4-1242 |  | Preparation & Submittals of SD of HVAC at L4 | 30d | 2015-01-13 | 2015-02-17 | SD-CS-L3-222 SS+6d | 102d | 0d | Shop Drawings Submittals [60 h] |
| SD-CS-L4-1252 |  | Review & Approval of SD of HVAC at L4 | 30d | 2015-01-25 | 2015-03-01 | SD-CS-L4-1242 SS+10d, SD-CS-L4-1242 FF+10d | 179d | 65d | Shop Drawings Approval [40 h] |
|  | 9 | **Level 5 Floor - Shop drawings** |  | 2015-01-20 | 2015-03-08 |  |  |  |  |
| SD-CS-L5-262 |  | Preparation & Submittals of SD of HVAC at L5 | 30d | 2015-01-20 | 2015-02-24 | SD-CS-L4-1242 SS+6d | 102d | 0d | Shop Drawings Submittals [60 h] |
| SD-CS-L5-272 |  | Review & Approval of SD of HVAC at L5 | 30d | 2015-02-01 | 2015-03-08 | SD-CS-L5-262 SS+10d, SD-CS-L5-262 FF+10d | 162d | 39d | Shop Drawings Approval [40 h] |
|  | 10 | **Level 6 Floor - Shop drawings** |  | 2015-01-27 | 2015-03-15 |  |  |  |  |
| SD-CS-L6-282 |  | Preparation & Submittals of SD of HVAC at L6 | 30d | 2015-01-27 | 2015-03-03 | SD-CS-L5-262 SS+6d | 102d | 0d | Shop Drawings Submittals [60 h] |
| SD-CS-L6-292 |  | Review & Approval of SD of HVAC at L6 | 30d | 2015-02-08 | 2015-03-15 | SD-CS-L6-282 SS+10d, SD-CS-L6-282 FF+10d | 167d | 40d | Shop Drawings Approval [40 h] |
|  | 11 | **Level 7 Floor - Shop drawings** |  | 2015-02-03 | 2015-03-22 |  |  |  |  |
| SD-CS-L7-302 |  | Preparation & Submittals of SD of HVAC at L7 | 30d | 2015-02-03 | 2015-03-10 | SD-CS-L6-282 SS+6d | 102d | 0d | Shop Drawings Submittals [60 h] |
| SD-CS-L7-312 |  | Review & Approval of SD of HVAC at L7 | 30d | 2015-02-16 | 2015-03-22 | SD-CS-L7-302 SS+10d, SD-CS-L7-302 FF+10d | 157d | 41d | Shop Drawings Approval [40 h] |
|  | 12 | **Level 8 Floor - Shop drawings** |  | 2015-02-11 | 2015-03-29 |  |  |  |  |
| SD-CS-L8-322 |  | Preparation & Submittals of SD of HVAC at L8 | 30d | 2015-02-11 | 2015-03-17 | SD-CS-L7-302 SS+6d | 102d | 0d | Shop Drawings Submittals [60 h] |
| SD-CS-L8-332 |  | Review & Approval of SD of HVAC at L8 | 30d | 2015-02-23 | 2015-03-29 | SD-CS-L8-322 SS+10d, SD-CS-L8-322 FF+10d | 174d | 42d | Shop Drawings Approval [40 h] |
|  | 13 | **Level 9 Floor - Shop drawings** |  | 2015-02-18 | 2015-04-05 |  |  |  |  |
| SD-CS-L9-342 |  | Preparation & Submittals of SD of HVAC at L9 | 30d | 2015-02-18 | 2015-03-24 | SD-CS-L8-322 SS+6d | 102d | 0d | Shop Drawings Submittals [60 h] |
| SD-CS-L9-352 |  | Review & Approval of SD of HVAC at L9 | 30d | 2015-03-02 | 2015-04-05 | SD-CS-L9-342 SS+10d, SD-CS-L9-342 FF+10d | 152d | 43d | Shop Drawings Approval [40 h] |

| ID | WBS | Activity | Duration | Start | Finish | Predecessors | Total float | Free float | Resources |
| --- | --- | --- | --- | --- | --- | --- | --- | --- | --- |
|  | 14 | **Level 10 Floor - Shop drawings** |  | 2015-02-25 | 2015-04-12 |  |  |  |  |
| SD-CS-L10-362 |  | Preparation & Submittals of SD of HVAC at L10 | 30d | 2015-02-25 | 2015-03-31 | SD-CS-L9-342 SS+6d | 102d | 0d | Shop Drawings Submittals [60 h] |
| SD-CS-L10-372 |  | Review & Approval of SD of HVAC at L10 | 30d | 2015-03-09 | 2015-04-12 | SD-CS-L10-362 SS+10d, SD-CS-L10-362 FF+10d | 171d | 52d | Shop Drawings Approval [40 h] |
|  | 15 | **Level 11 Floor - Shop drawings** |  | 2015-03-04 | 2015-04-19 |  |  |  |  |
| SD-CS-L11-382 |  | Preparation & Submittals of SD of HVAC at L11 | 30d | 2015-03-04 | 2015-04-07 | SD-CS-L10-362 SS+6d | 102d | 0d | Shop Drawings Submittals [60 h] |
| SD-CS-L11-392 |  | Review & Approval of SD of HVAC at L11 | 30d | 2015-03-16 | 2015-04-19 | SD-CS-L11-382 SS+10d, SD-CS-L11-382 FF+10d | 149d | 45d | Shop Drawings Approval [40 h] |
|  | 16 | **Level 12 Floor - Shop drawings** |  | 2015-03-11 | 2015-04-26 |  |  |  |  |
| SD-CS-L12-402 |  | Preparation & Submittals of SD of HVAC at L12 | 30d | 2015-03-11 | 2015-04-14 | SD-CS-L11-382 SS+6d | 102d | 0d | Shop Drawings Submittals [60 h] |
| SD-CS-L12-412 |  | Review & Approval of SD of HVAC at L12 | 30d | 2015-03-23 | 2015-04-26 | SD-CS-L12-402 SS+10d, SD-CS-L12-402 FF+10d | 154d | 46d | Shop Drawings Approval [40 h] |
|  | 17 | **Level 13 Floor - Shop drawings** |  | 2015-03-18 | 2015-05-03 |  |  |  |  |
| SD-CS-L13-422 |  | Preparation & Submittals of SD of HVAC at L13 | 30d | 2015-03-18 | 2015-04-21 | SD-CS-L12-402 SS+6d | 102d | 0d | Shop Drawings Submittals [60 h] |
| SD-CS-L13-432 |  | Review & Approval of SD of HVAC at L13 | 30d | 2015-03-30 | 2015-05-03 | SD-CS-L13-422 SS+10d, SD-CS-L13-422 FF+10d | 144d | 54d | Shop Drawings Approval [40 h] |
|  | 18 | **Level 14 Floor - Shop drawings** |  | 2015-03-25 | 2015-05-10 |  |  |  |  |
| SD-CS-L14-442 |  | Preparation & Submittals of SD of HVAC at L14 | 30d | 2015-03-25 | 2015-04-28 | SD-CS-L13-422 SS+6d | 102d | 0d | Shop Drawings Submittals [60 h] |
| SD-CS-L14-452 |  | Review & Approval of SD of HVAC at L14 | 30d | 2015-04-06 | 2015-05-10 | SD-CS-L14-442 SS+10d, SD-CS-L14-442 FF+10d | 161d | 48d | Shop Drawings Approval [40 h] |
|  | 19 | **Level 15 Floor - Shop drawings** |  | 2015-04-01 | 2015-05-17 |  |  |  |  |
| SD-CS-L15-462 |  | Preparation & Submittals of SD of HVAC at L15 | 30d | 2015-04-01 | 2015-05-05 | SD-CS-L14-442 SS+6d | 102d | 0d | Shop Drawings Submittals [60 h] |
| SD-CS-L15-472 |  | Review & Approval of SD of HVAC at L15 | 30d | 2015-04-13 | 2015-05-17 | SD-CS-L15-462 SS+10d, SD-CS-L15-462 FF+10d | 164d | 56d | Shop Drawings Approval [40 h] |
|  | 20 | **Level 16 Floor - Shop drawings** |  | 2015-04-08 | 2015-05-24 |  |  |  |  |
| SD-CS-L16-482 |  | Preparation & Submittals of SD of HVAC at L16 | 30d | 2015-04-08 | 2015-05-12 | SD-CS-L15-462 SS+6d | 102d | 0d | Shop Drawings Submittals [60 h] |
| SD-CS-L16-492 |  | Review & Approval of SD of HVAC at L16 | 30d | 2015-04-20 | 2015-05-24 | SD-CS-L16-482 SS+10d, SD-CS-L16-482 FF+10d | 158d | 50d | Shop Drawings Approval [40 h] |
|  | 21 | **Level 17 Floor - Shop drawings** |  | 2015-04-15 | 2015-05-31 |  |  |  |  |
| SD-CS-L17-1262 |  | Preparation & Submittals of SD of HVAC at L17 | 30d | 2015-04-15 | 2015-05-19 | SD-CS-L16-482 SS+6d | 102d | 0d | Shop Drawings Submittals [60 h] |
| SD-CS-L17-1272 |  | Review & Approval of SD of HVAC at L17 | 30d | 2015-04-27 | 2015-05-31 | SD-CS-L17-1262 SS+10d, SD-CS-L17-1262 FF+10d | 136d | 58d | Shop Drawings Approval [40 h] |

| ID | WBS | Activity | Duration | Start | Finish | Predecessors | Total float | Free float | Resources |
| --- | --- | --- | --- | --- | --- | --- | --- | --- | --- |
|  | 22 | **Level 18 Floor - Shop drawings** |  | 2015-04-22 | 2015-06-07 |  |  |  |  |
| SD-CS-L18-522 |  | Preparation & Submittals of SD of HVAC at L18 | 30d | 2015-04-22 | 2015-05-26 | SD-CS-L17-1262 SS+6d | 102d | 0d | Shop Drawings Submittals [60 h] |
| SD-CS-L18-532 |  | Review & Approval of SD of HVAC at L18 | 30d | 2015-05-04 | 2015-06-07 | SD-CS-L18-522 SS+10d, SD-CS-L18-522 FF+10d | 141d | 54d | Shop Drawings Approval [40 h] |
|  | 23 | **Level 19 Floor - Shop drawings** |  | 2015-04-29 | 2015-06-14 |  |  |  |  |
| SD-CS-L19-542 |  | Preparation & Submittals of SD of HVAC at L19 | 30d | 2015-04-29 | 2015-06-02 | SD-CS-L18-522 SS+6d | 102d | 0d | Shop Drawings Submittals [60 h] |
| SD-CS-L19-552 |  | Review & Approval of SD of HVAC at L19 | 30d | 2015-05-11 | 2015-06-14 | SD-CS-L19-542 SS+10d, SD-CS-L19-542 FF+10d | 133d | 55d | Shop Drawings Approval [40 h] |
|  | 24 | **Level 20 Floor - Shop drawings** |  | 2015-05-05 | 2015-06-20 |  |  |  |  |
| SD-CS-L20-562 |  | Preparation & Submittals of SD of HVAC at L20 | 30d | 2015-05-05 | 2015-06-08 | SD-CS-L19-542 SS+5d | 102d | 0d | Shop Drawings Submittals [60 h] |
| SD-CS-L20-572 |  | Review & Approval of SD of HVAC at L20 | 30d | 2015-05-17 | 2015-06-20 | SD-CS-L20-562 SS+10d, SD-CS-L20-562 FF+10d | 149d | 57d | Shop Drawings Approval [40 h] |
|  | 25 | **Level 21 Floor - Shop drawings** |  | 2015-05-11 | 2015-06-25 |  |  |  |  |
| SD-CS-L21-582 |  | Preparation & Submittals of SD of HVAC at L21 | 30d | 2015-05-11 | 2015-06-14 | SD-CS-L20-562 SS+5d | 102d | 0d | Shop Drawings Submittals [60 h] |
| SD-CS-L21-592 |  | Review & Approval of SD of HVAC at L21 | 30d | 2015-05-23 | 2015-06-25 | SD-CS-L21-582 SS+10d, SD-CS-L21-582 FF+10d | 130d | 66d | Shop Drawings Approval [40 h] |
|  | 26 | **Level 22 Floor - Shop drawings** |  | 2015-05-17 | 2015-07-01 |  |  |  |  |
| SD-CS-L22-602 |  | Preparation & Submittals of SD of HVAC at L22 | 30d | 2015-05-17 | 2015-06-20 | SD-CS-L21-582 SS+5d | 102d | 0d | Shop Drawings Submittals [60 h] |
| SD-CS-L22-612 |  | Review & Approval of SD of HVAC at L22 | 30d | 2015-05-28 | 2015-07-01 | SD-CS-L22-602 SS+10d, SD-CS-L22-602 FF+10d | 148d | 61d | Shop Drawings Approval [40 h] |
|  | 27 | **Level 23 Floor - Shop drawings** |  | 2015-05-23 | 2015-07-07 |  |  |  |  |
| SD-CS-L23-622 |  | Preparation & Submittals of SD of HVAC at L23 | 30d | 2015-05-23 | 2015-06-25 | SD-CS-L22-602 SS+5d | 102d | 0d | Shop Drawings Submittals [60 h] |
| SD-CS-L23-632 |  | Review & Approval of SD of HVAC at L23 | 30d | 2015-06-03 | 2015-07-07 | SD-CS-L23-622 SS+10d, SD-CS-L23-622 FF+10d | 129d | 70d | Shop Drawings Approval [40 h] |
|  | 28 | **Level 24 Floor - Shop drawings** |  | 2015-05-28 | 2015-07-13 |  |  |  |  |
| SD-CS-L24-642 |  | Preparation & Submittals of SD of HVAC at L24 | 30d | 2015-05-28 | 2015-07-01 | SD-CS-L23-622 SS+5d | 102d | 0d | Shop Drawings Submittals [60 h] |
| SD-CS-L24-652 |  | Review & Approval of SD of HVAC at L24 | 30d | 2015-06-09 | 2015-07-13 | SD-CS-L24-642 SS+10d, SD-CS-L24-642 FF+10d | 133d | 65d | Shop Drawings Approval [40 h] |
|  | 29 | **Level 25 Floor - Shop drawings** |  | 2015-06-03 | 2015-07-21 |  |  |  |  |
| SD-CS-L25-662 |  | Preparation & Submittals of SD of HVAC at L25 | 30d | 2015-06-03 | 2015-07-07 | SD-CS-L24-642 SS+5d | 102d | 0d | Shop Drawings Submittals [60 h] |
| SD-CS-L25-672 |  | Review & Approval of SD of HVAC at L25 | 30d | 2015-06-15 | 2015-07-21 | SD-CS-L25-662 SS+10d, SD-CS-L25-662 FF+10d | 126d | 63d | Shop Drawings Approval [40 h] |

| ID | WBS | Activity | Duration | Start | Finish | Predecessors | Total float | Free float | Resources |
| --- | --- | --- | --- | --- | --- | --- | --- | --- | --- |
|  | 30 | **Level 26 Floor - Shop drawings** |  | 2015-06-09 | 2015-07-27 |  |  |  |  |
| SD-CS-L26-682 |  | Preparation & Submittals of SD of HVAC at L26 | 30d | 2015-06-09 | 2015-07-13 | SD-CS-L25-662 SS+5d | 102d | 0d | Shop Drawings Submittals [60 h] |
| SD-CS-L26-692 |  | Review & Approval of SD of HVAC at L26 | 30d | 2015-06-21 | 2015-07-27 | SD-CS-L26-682 SS+10d, SD-CS-L26-682 FF+10d | 142d | 64d | Shop Drawings Approval [40 h] |
|  | 31 | **Level 27 Floor - Shop drawings** |  | 2015-06-15 | 2015-08-02 |  |  |  |  |
| SD-CS-L27-702 |  | Preparation & Submittals of SD of HVAC at L27 | 30d | 2015-06-15 | 2015-07-21 | SD-CS-L26-682 SS+5d | 102d | 0d | Shop Drawings Submittals [60 h] |
| SD-CS-L27-712 |  | Review & Approval of SD of HVAC at L27 | 30d | 2015-06-27 | 2015-08-02 | SD-CS-L27-702 SS+10d, SD-CS-L27-702 FF+10d | 148d | 65d | Shop Drawings Approval [40 h] |
|  | 32 | **Level 28 Floor - Shop drawings** |  | 2015-06-21 | 2015-08-08 |  |  |  |  |
| SD-CS-L28-722 |  | Preparation & Submittals of SD of HVAC at L28 | 30d | 2015-06-21 | 2015-07-27 | SD-CS-L27-702 SS+5d | 102d | 0d | Shop Drawings Submittals [60 h] |
| SD-CS-L28-732 |  | Review & Approval of SD of HVAC at L28 | 30d | 2015-07-02 | 2015-08-08 | SD-CS-L28-722 SS+10d, SD-CS-L28-722 FF+10d | 141d | 74d | Shop Drawings Approval [40 h] |
|  | 33 | **Level 29 Floor - Shop drawings** |  | 2015-06-27 | 2015-08-13 |  |  |  |  |
| SD-CS-L29-742 |  | Preparation & Submittals of SD of HVAC at L29 | 30d | 2015-06-27 | 2015-08-02 | SD-CS-L28-722 SS+5d | 102d | 0d | Shop Drawings Submittals [60 h] |
| SD-CS-L29-752 |  | Review & Approval of SD of HVAC at L29 | 30d | 2015-07-08 | 2015-08-13 | SD-CS-L29-742 SS+10d, SD-CS-L29-742 FF+10d | 122d | 69d | Shop Drawings Approval [40 h] |
|  | 34 | **Level 30 Floor - Shop drawings** |  | 2015-07-02 | 2015-08-19 |  |  |  |  |
| SD-CS-L30-762 |  | Preparation & Submittals of SD of HVAC at L30 | 30d | 2015-07-02 | 2015-08-08 | SD-CS-L29-742 SS+5d | 102d | 0d | Shop Drawings Submittals [60 h] |
| SD-CS-L30-772 |  | Review & Approval of SD of HVAC at L30 | 30d | 2015-07-14 | 2015-08-19 | SD-CS-L30-762 SS+10d, SD-CS-L30-762 FF+10d | 126d | 68d | Shop Drawings Approval [40 h] |
|  | 35 | **Level 31 Floor - Shop drawings** |  | 2015-07-08 | 2015-08-25 |  |  |  |  |
| SD-CS-L31-782 |  | Preparation & Submittals of SD of HVAC at L31 | 30d | 2015-07-08 | 2015-08-13 | SD-CS-L30-762 SS+5d | 102d | 0d | Shop Drawings Submittals [60 h] |
| SD-CS-L31-792 |  | Review & Approval of SD of HVAC at L31 | 30d | 2015-07-22 | 2015-08-25 | SD-CS-L31-782 SS+10d, SD-CS-L31-782 FF+10d | 121d | 77d | Shop Drawings Approval [40 h] |
|  | 36 | **Level 32 Floor - Shop drawings** |  | 2015-07-14 | 2015-08-31 |  |  |  |  |
| SD-CS-L32-802 |  | Preparation & Submittals of SD of HVAC at L32 | 30d | 2015-07-14 | 2015-08-19 | SD-CS-L31-782 SS+5d | 102d | 0d | Shop Drawings Submittals [60 h] |
| SD-CS-L32-812 |  | Review & Approval of SD of HVAC at L32 | 30d | 2015-07-28 | 2015-08-31 | SD-CS-L32-802 SS+10d, SD-CS-L32-802 FF+10d | 135d | 73d | Shop Drawings Approval [40 h] |
|  | 37 | **Level 33 Floor - Shop drawings** |  | 2015-07-22 | 2015-09-06 |  |  |  |  |
| SD-CS-L33-822 |  | Preparation & Submittals of SD of HVAC at L33 | 30d | 2015-07-22 | 2015-08-25 | SD-CS-L32-802 SS+5d | 102d | 0d | Shop Drawings Submittals [60 h] |
| SD-CS-L33-832 |  | Review & Approval of SD of HVAC at L33 | 30d | 2015-08-03 | 2015-09-06 | SD-CS-L33-822 SS+10d, SD-CS-L33-822 FF+10d | 118d | 74d | Shop Drawings Approval [40 h] |

| ID | WBS | Activity | Duration | Start | Finish | Predecessors | Total float | Free float | Resources |
| --- | --- | --- | --- | --- | --- | --- | --- | --- | --- |
|  | 38 | **Level 34 Floor - Shop drawings** |  | 2015-07-28 | 2015-09-12 |  |  |  |  |
| SD-CS-L34-842 |  | Preparation & Submittals of SD of HVAC at L34 | 30d | 2015-07-28 | 2015-08-31 | SD-CS-L33-822 SS+5d | 102d | 0d | Shop Drawings Submittals [60 h] |
| SD-CS-L34-852 |  | Review & Approval of SD of HVAC at L34 | 30d | 2015-08-09 | 2015-09-12 | SD-CS-L34-842 SS+10d, SD-CS-L34-842 FF+10d | 134d | 75d | Shop Drawings Approval [40 h] |
|  | 39 | **Level 35 Floor - Shop drawings** |  | 2015-08-03 | 2015-09-17 |  |  |  |  |
| SD-CS-L35-862 |  | Preparation & Submittals of SD of HVAC at L35 | 30d | 2015-08-03 | 2015-09-06 | SD-CS-L34-842 SS+5d | 102d | 0d | Shop Drawings Submittals [60 h] |
| SD-CS-L35-872 |  | Review & Approval of SD of HVAC at L35 | 30d | 2015-08-15 | 2015-09-17 | SD-CS-L35-862 SS+10d, SD-CS-L35-862 FF+10d | 117d | 84d | Shop Drawings Approval [40 h] |
|  | 40 | **Level 36 Floor - Shop drawings** |  | 2015-08-09 | 2015-09-27 |  |  |  |  |
| SD-CS-L36-882 |  | Preparation & Submittals of SD of HVAC at L36 | 30d | 2015-08-09 | 2015-09-12 | SD-CS-L35-862 SS+5d | 102d | 0d | Shop Drawings Submittals [60 h] |
| SD-CS-L36-892 |  | Review & Approval of SD of HVAC at L36 | 30d | 2015-08-20 | 2015-09-27 | SD-CS-L36-882 SS+10d, SD-CS-L36-882 FF+10d | 119d | 79d | Shop Drawings Approval [40 h] |
|  | 41 | **Level 37 Floor - Shop drawings** |  | 2015-08-15 | 2015-10-03 |  |  |  |  |
| SD-CS-L37-902 |  | Preparation & Submittals of SD of HVAC at L37 | 30d | 2015-08-15 | 2015-09-17 | SD-CS-L36-882 SS+5d | 102d | 0d | Shop Drawings Submittals [60 h] |
| SD-CS-L37-912 |  | Review & Approval of SD of HVAC at L37 | 30d | 2015-08-26 | 2015-10-03 | SD-CS-L37-902 SS+10d, SD-CS-L37-902 FF+10d | 114d | 78d | Shop Drawings Approval [40 h] |
|  | 42 | **Level 38 Floor - Shop drawings** |  | 2015-08-20 | 2015-10-08 |  |  |  |  |
| SD-CS-L38-922 |  | Preparation & Submittals of SD of HVAC at L38 | 30d | 2015-08-20 | 2015-09-27 | SD-CS-L37-902 SS+5d | 102d | 0d | Shop Drawings Submittals [60 h] |
| SD-CS-L38-932 |  | Review & Approval of SD of HVAC at L38 | 30d | 2015-09-01 | 2015-10-08 | SD-CS-L38-922 SS+10d, SD-CS-L38-922 FF+10d | 129d | 79d | Shop Drawings Approval [40 h] |
|  | 43 | **Level 39 Floor - Shop drawings** |  | 2015-08-26 | 2015-10-14 |  |  |  |  |
| SD-CS-L39-942 |  | Preparation & Submittals of SD of HVAC at L39 | 30d | 2015-08-26 | 2015-10-03 | SD-CS-L38-922 SS+5d | 102d | 0d | Shop Drawings Submittals [60 h] |
| SD-CS-L39-952 |  | Review & Approval of SD of HVAC at L39 | 30d | 2015-09-07 | 2015-10-14 | SD-CS-L39-942 SS+10d, SD-CS-L39-942 FF+10d | 113d | 88d | Shop Drawings Approval [40 h] |
|  | 44 | **Level 40 Floor - Shop drawings** |  | 2015-09-01 | 2015-10-20 |  |  |  |  |
| SD-CS-L40-962 |  | Preparation & Submittals of SD of HVAC at L40 | 30d | 2015-09-01 | 2015-10-08 | SD-CS-L39-942 SS+5d | 102d | 0d | Shop Drawings Submittals [60 h] |
| SD-CS-L40-972 |  | Review & Approval of SD of HVAC at L40 | 30d | 2015-09-13 | 2015-10-20 | SD-CS-L40-962 SS+10d, SD-CS-L40-962 FF+10d | 127d | 83d | Shop Drawings Approval [40 h] |
|  | 45 | **Level 41 Floor - Shop drawings** |  | 2015-09-07 | 2015-10-26 |  |  |  |  |
| SD-CS-L41-982 |  | Preparation & Submittals of SD of HVAC at L41 | 30d | 2015-09-07 | 2015-10-14 | SD-CS-L40-962 SS+5d | 102d | 0d | Shop Drawings Submittals [60 h] |
| SD-CS-L41-992 |  | Review & Approval of SD of HVAC at L41 | 30d | 2015-09-19 | 2015-10-26 | SD-CS-L41-982 SS+10d, SD-CS-L41-982 FF+10d | 110d | 82d | Shop Drawings Approval [40 h] |

| ID | WBS | Activity | Duration | Start | Finish | Predecessors | Total float | Free float | Resources |
| --- | --- | --- | --- | --- | --- | --- | --- | --- | --- |
|  | 46 | **Level 42 Floor - Shop drawings** |  | 2015-09-13 | 2015-11-01 |  |  |  |  |
| SD-CS-L42-1002 |  | Preparation & Submittals of SD of HVAC at L42 | 30d | 2015-09-13 | 2015-10-20 | SD-CS-L41-982 SS+5d | 102d | 0d | Shop Drawings Submittals [60 h] |
| SD-CS-L42-1012 |  | Review & Approval of SD of HVAC at L42 | 30d | 2015-09-28 | 2015-11-01 | SD-CS-L42-1002 SS+10d, SD-CS-L42-1002 FF+10d | 112d | 91d | Shop Drawings Approval [40 h] |
|  | 47 | **Level 43 Floor - Shop drawings** |  | 2015-09-19 | 2015-11-07 |  |  |  |  |
| SD-CS-L43-1022 |  | Preparation & Submittals of SD of HVAC at L43 | 30d | 2015-09-19 | 2015-10-26 | SD-CS-L42-1002 SS+5d | 102d | 0d | Shop Drawings Submittals [60 h] |
| SD-CS-L43-1032 |  | Review & Approval of SD of HVAC at L43 | 30d | 2015-10-04 | 2015-11-07 | SD-CS-L43-1022 SS+10d, SD-CS-L43-1022 FF+10d | 109d | 86d | Shop Drawings Approval [40 h] |
|  | 48 | **Level 44 Floor - Shop drawings** |  | 2015-09-28 | 2015-11-12 |  |  |  |  |
| SD-CS-L44-1042 |  | Preparation & Submittals of SD of HVAC at L44 | 30d | 2015-09-28 | 2015-11-01 | SD-CS-L43-1022 SS+5d | 102d | 0d | Shop Drawings Submittals [60 h] |
| SD-CS-L44-1052 |  | Review & Approval of SD of HVAC at L44 | 30d | 2015-10-10 | 2015-11-12 | SD-CS-L44-1042 SS+10d, SD-CS-L44-1042 FF+10d | 122d | 85d | Shop Drawings Approval [40 h] |
|  | 49 | **Level 45 Floor - Shop drawings** |  | 2015-10-04 | 2015-11-18 |  |  |  |  |
| SD-CS-L45-1062 |  | Preparation & Submittals of SD of HVAC at L45 | 30d | 2015-10-04 | 2015-11-07 | SD-CS-L44-1042 SS+5d | 102d | 0d | Shop Drawings Submittals [60 h] |
| SD-CS-L45-1072 |  | Review & Approval of SD of HVAC at L45 | 30d | 2015-10-15 | 2015-11-18 | SD-CS-L45-1062 SS+10d, SD-CS-L45-1062 FF+10d | 106d | 94d | Shop Drawings Approval [40 h] |
|  | 50 | **Level 46 Floor - Shop drawings** |  | 2015-10-10 | 2015-11-24 |  |  |  |  |
| SD-CS-L46-1082 |  | Preparation & Submittals of SD of HVAC at L46 | 30d | 2015-10-10 | 2015-11-12 | SD-CS-L45-1062 SS+5d | 102d | 0d | Shop Drawings Submittals [60 h] |
| SD-CS-L46-1092 |  | Review & Approval of SD of HVAC at L46 | 30d | 2015-10-21 | 2015-11-24 | SD-CS-L46-1082 SS+10d, SD-CS-L46-1082 FF+10d | 120d | 89d | Shop Drawings Approval [40 h] |
|  | 53 | **Level 47 Floor - Shop drawings** |  | 2015-10-15 | 2015-11-30 |  |  |  |  |
| SD-CS-L47-1102 |  | Preparation & Submittals of SD of HVAC at L47 | 30d | 2015-10-15 | 2015-11-18 | SD-CS-L46-1082 SS+5d | 102d | 0d | Shop Drawings Submittals [60 h] |
| SD-CS-L47-1112 |  | Review & Approval of SD of HVAC at L47 | 30d | 2015-10-27 | 2015-11-30 | SD-CS-L47-1102 SS+10d, SD-CS-L47-1102 FF+10d | 110d | 88d | Shop Drawings Approval [40 h] |
|  | 51 | **Level 48 Floor - Shop drawings** |  | 2015-10-21 | 2015-12-06 |  |  |  |  |
| SD-CS-L48-1122 |  | Preparation & Submittals of SD of HVAC at L48 | 30d | 2015-10-21 | 2015-11-24 | SD-CS-L47-1102 SS+5d | 102d | 0d | Shop Drawings Submittals [60 h] |
| SD-CS-L48-1132 |  | Review & Approval of SD of HVAC at L48 | 30d | 2015-11-02 | 2015-12-06 | SD-CS-L48-1122 SS+10d, SD-CS-L48-1122 FF+10d | 105d | 89d | Shop Drawings Approval [40 h] |
|  | 52 | **Level 49 Floor - Shop drawings** |  | 2015-10-27 | 2015-12-12 |  |  |  |  |
| SD-CS-L49-1142 |  | Preparation & Submittals of SD of HVAC at L49 | 30d | 2015-10-27 | 2015-11-30 | SD-CS-L48-1122 SS+5d | 102d | 0d | Shop Drawings Submittals [60 h] |
| SD-CS-L49-1152 |  | Review & Approval of SD of HVAC at L49 | 30d | 2015-11-08 | 2015-12-12 | SD-CS-L49-1142 SS+10d, SD-CS-L49-1142 FF+10d | 102d | 91d | Shop Drawings Approval [40 h] |

| ID | WBS | Activity | Duration | Start | Finish | Predecessors | Total float | Free float | Resources |
| --- | --- | --- | --- | --- | --- | --- | --- | --- | --- |
|  | 54 | **Level 50 Floor - Shop drawings** |  | 2015-11-02 | 2015-12-17 |  |  |  |  |
| SD-CS-L50-1162 |  | Preparation & Submittals of SD of HVAC at L50 | 30d | 2015-11-02 | 2015-12-06 | SD-CS-L49-1142 SS+5d | 102d | 0d | Shop Drawings Submittals [60 h] |
| SD-CS-L50-1172 |  | Review & Approval of SD of HVAC at L50 | 30d | 2015-11-14 | 2015-12-17 | SD-CS-L50-1162 SS+10d, SD-CS-L50-1162 FF+10d | 115d | 92d | Shop Drawings Approval [40 h] |
|  | 55 | **Level 51 Floor - Shop drawings** |  | 2015-11-08 | 2015-12-24 |  |  |  |  |
| SD-CS-L51-1442 |  | Preparation & Submittals of SD of HVAC at L51 | 30d | 2015-11-08 | 2015-12-12 | SD-CS-L50-1162 SS+5d | 102d | 0d | Shop Drawings Submittals [60 h] |
| SD-CS-L51-1452 |  | Review & Approval of SD of HVAC at L51 | 30d | 2015-11-19 | 2015-12-24 | SD-CS-L51-1442 SS+10d, SD-CS-L51-1442 FF+10d | 102d | 87d | Shop Drawings Approval [40 h] |
|  | 4 | **Plumbing & Drainage - Drawings** |  | 2014-11-03 | 2016-02-08 |  |  |  |  |
|  | R | **Basement 3 Floor level - Shop drawings** |  | 2014-11-03 | 2014-12-20 |  |  |  |  |
| SD-CS-B3-282 |  | Preparation & Submittals of SD of Plumbing & Drainage Works at B3 | 30d | 2014-11-03 | 2014-12-07 | PQ-CS-C-412, PQ-CS-C-432 | 86d | 0d | Shop Drawings Submittals [60 h] |
| SD-CS-B3-292 |  | Review & Approval of SD of Plumbing & Drainage Works at B3 | 30d | 2014-11-15 | 2014-12-20 | SD-CS-B3-282 SS+10d, SD-CS-B3-282 FF+10d | 334d | 299d | Shop Drawings Approval [40 h] |
|  | 1 | **Basement 2 Floor level - Shop drawings** |  | 2014-11-10 | 2014-12-27 |  |  |  |  |
| SD-CS-B3-262 |  | Preparation & Submittals of SD of Plumbing & Drainage Works at B2 | 30d | 2014-11-10 | 2014-12-14 | SD-CS-B3-282 SS+6d, PQ-CS-C-412, PQ-CS-C-432 | 86d | 0d | Shop Drawings Submittals [60 h] |
| SD-CS-B3-272 |  | Review & Approval of SD of Plumbing & Drainage Works at B2 | 30d | 2014-11-22 | 2014-12-27 | SD-CS-B3-262 SS+10d, SD-CS-B3-262 FF+10d | 319d | 313d | Shop Drawings Approval [40 h] |
|  | 2 | **Basement 1 Floor level - Shop drawings** |  | 2014-11-17 | 2015-01-03 |  |  |  |  |
| SD-CS-B2-222 |  | Preparation & Submittals of SD of Plumbing & Drainage Works at B1 | 30d | 2014-11-17 | 2014-12-22 | SD-CS-B3-262 SS+6d, PQ-CS-C-412, PQ-CS-C-432 | 86d | 0d | Shop Drawings Submittals [60 h] |
| SD-CS-B2-232 |  | Review & Approval of SD of Plumbing & Drainage Works at B1 | 30d | 2014-11-29 | 2015-01-03 | SD-CS-B2-222 SS+10d, SD-CS-B2-222 FF+10d | 339d | 327d | Shop Drawings Approval [40 h] |
|  | 3 | **Ground Floor level - Shop drawings** |  | 2014-12-15 | 2015-01-31 |  |  |  |  |
| SD-CS-B1-222 |  | Preparation & Submittals of SD of Plumbing & Drainage Works at GF | 30d | 2014-12-15 | 2015-01-19 | SD-CS-B2-222 SS+6d, PQ-CS-C-432, G-CD-003 | 68d | 0d | Shop Drawings Submittals [60 h] |
| SD-CS-B1-232 |  | Review & Approval of SD of Plumbing & Drainage Works at GF | 30d | 2014-12-28 | 2015-01-31 | SD-CS-B1-222 SS+10d, SD-CS-B1-222 FF+10d | 147d | 45d | Shop Drawings Approval [40 h] |
|  | 4 | **Mezzanine Floor level - Shop drawings** |  | 2014-12-24 | 2015-02-08 |  |  |  |  |
| SD-CS-GF-222 |  | Preparation & Submittals of SD of Plumbing & Drainage Works at ML | 30d | 2014-12-24 | 2015-01-27 | SD-CS-B1-222 SS+7d, PQ-CS-C-432 | 68d | 0d | Shop Drawings Submittals [60 h] |
| SD-CS-GF-232 |  | Review & Approval of SD of Plumbing & Drainage Works at ML | 30d | 2015-01-05 | 2015-02-08 | SD-CS-GF-222 SS+10d, SD-CS-GF-222 FF+10d | 162d | 46d | Shop Drawings Approval [40 h] |
|  | 5 | **Level 1 Floor - Shop drawings** |  | 2014-12-31 | 2015-02-16 |  |  |  |  |
| SD-CS-L1-242 |  | Preparation & Submittals of SD of Plumbing & Drainage Works at L1 | 30d | 2014-12-31 | 2015-02-03 | PQ-CS-C-432, SD-CS-GF-222 SS+6d | 156d | 0d | Shop Drawings Submittals [60 h] |
| SD-CS-L1-252 |  | Review & Approval of SD of Plumbing & Drainage Works at L1 | 30d | 2015-01-12 | 2015-02-16 | SD-CS-L1-242 SS+10d, SD-CS-L1-242 FF+10d | 156d | 46d | Shop Drawings Approval [40 h] |

| ID | WBS | Activity | Duration | Start | Finish | Predecessors | Total float | Free float | Resources |
| --- | --- | --- | --- | --- | --- | --- | --- | --- | --- |
|  | 6 | **Level 2 Floor - Shop drawings** |  | 2015-01-01 | 2015-02-17 |  |  |  |  |
| SD-CS-L2-262 |  | Preparation & Submittals of SD of Plumbing & Drainage Works at L2 | 30d | 2015-01-01 | 2015-02-04 | SD-CS-GF-222 SS+7d, PQ-CS-C-432 | 68d | 0d | Shop Drawings Submittals [60 h] |
| SD-CS-L2-272 |  | Review & Approval of SD of Plumbing & Drainage Works at L2 | 30d | 2015-01-13 | 2015-02-17 | SD-CS-L2-262 SS+10d, SD-CS-L2-262 FF+10d | 198d | 62d | Shop Drawings Approval [40 h] |
|  | 7 | **Level 3 Floor - Shop drawings** |  | 2015-01-10 | 2015-02-25 |  |  |  |  |
| SD-CS-L3-282 |  | Preparation & Submittals of SD of Plumbing & Drainage Works at L3 | 30d | 2015-01-10 | 2015-02-14 | SD-CS-L2-262 SS+7d, PQ-CS-C-432 | 68d | 0d | Shop Drawings Submittals [60 h] |
| SD-CS-L3-292 |  | Review & Approval of SD of Plumbing & Drainage Works at L3 | 30d | 2015-01-21 | 2015-02-25 | SD-CS-L3-282 SS+10d, SD-CS-L3-282 FF+10d | 195d | 59d | Shop Drawings Approval [40 h] |
|  | 8 | **Level 4 Floor - Shop drawings** |  | 2015-01-18 | 2015-03-05 |  |  |  |  |
| SD-CS-L4-1302 |  | Preparation & Submittals of SD of Plumbing & Drainage Works at L4 | 30d | 2015-01-18 | 2015-02-22 | SD-CS-L3-282 SS+7d, PQ-CS-C-432 | 68d | 0d | Shop Drawings Submittals [60 h] |
| SD-CS-L4-1312 |  | Review & Approval of SD of Plumbing & Drainage Works at L4 | 30d | 2015-01-29 | 2015-03-05 | SD-CS-L4-1302 SS+10d, SD-CS-L4-1302 FF+10d | 191d | 71d | Shop Drawings Approval [40 h] |
|  | 9 | **Level 5 Floor - Shop drawings** |  | 2015-01-26 | 2015-03-14 |  |  |  |  |
| SD-CS-L5-322 |  | Preparation & Submittals of SD of Plumbing & Drainage Works at L5 | 30d | 2015-01-26 | 2015-03-02 | SD-CS-L4-1302 SS+7d, PQ-CS-C-432 | 68d | 0d | Shop Drawings Submittals [60 h] |
| SD-CS-L5-332 |  | Review & Approval of SD of Plumbing & Drainage Works at L5 | 30d | 2015-02-07 | 2015-03-14 | SD-CS-L5-322 SS+10d, SD-CS-L5-322 FF+10d | 184d | 59d | Shop Drawings Approval [40 h] |
|  | 10 | **Level 6 Floor - Shop drawings** |  | 2015-02-03 | 2015-04-01 |  |  |  |  |
| SD-CS-L6-342 |  | Preparation & Submittals of SD of Plumbing & Drainage Works at L6 | 30d | 2015-02-03 | 2015-03-10 | SD-CS-L5-322 SS+7d, PQ-CS-C-432 | 68d | 0d | Shop Drawings Submittals [60 h] |
| SD-CS-L6-352 |  | Review & Approval of SD of Plumbing & Drainage Works at L6 | 30d | 2015-02-26 | 2015-04-01 | SD-CS-L6-342 SS+10d, SD-CS-L6-342 FF+19d | 184d | 50d | Shop Drawings Approval [40 h] |
|  | 11 | **Level 7 Floor - Shop drawings** |  | 2015-02-12 | 2015-03-30 |  |  |  |  |
| SD-CS-L7-362 |  | Preparation & Submittals of SD of Plumbing & Drainage Works at L7 | 30d | 2015-02-12 | 2015-03-18 | SD-CS-L6-342 SS+7d | 68d | 0d | Shop Drawings Submittals [60 h] |
| SD-CS-L7-372 |  | Review & Approval of SD of Plumbing & Drainage Works at L7 | 30d | 2015-02-24 | 2015-03-30 | SD-CS-L7-362 SS+10d, SD-CS-L7-362 FF+10d | 214d | 59d | Shop Drawings Approval [40 h] |
|  | 12 | **Level 8 Floor - Shop drawings** |  | 2015-02-21 | 2015-04-07 |  |  |  |  |
| SD-CS-L8-382 |  | Preparation & Submittals of SD of Plumbing & Drainage Works at L8 | 30d | 2015-02-21 | 2015-03-26 | SD-CS-L7-362 SS+7d | 68d | 0d | Shop Drawings Submittals [60 h] |
| SD-CS-L8-392 |  | Review & Approval of SD of Plumbing & Drainage Works at L8 | 30d | 2015-03-04 | 2015-04-07 | SD-CS-L8-382 SS+10d, SD-CS-L8-382 FF+10d | 215d | 59d | Shop Drawings Approval [40 h] |
|  | 13 | **Level 9 Floor - Shop drawings** |  | 2015-03-01 | 2015-04-15 |  |  |  |  |
| SD-CS-L9-402 |  | Preparation & Submittals of SD of Plumbing & Drainage Works at L9 | 30d | 2015-03-01 | 2015-04-04 | SD-CS-L8-382 SS+7d | 68d | 0d | Shop Drawings Submittals [60 h] |
| SD-CS-L9-412 |  | Review & Approval of SD of Plumbing & Drainage Works at L9 | 30d | 2015-03-12 | 2015-04-15 | SD-CS-L9-402 SS+10d, SD-CS-L9-402 FF+10d | 158d | 59d | Shop Drawings Approval [40 h] |

| ID | WBS | Activity | Duration | Start | Finish | Predecessors | Total float | Free float | Resources |
| --- | --- | --- | --- | --- | --- | --- | --- | --- | --- |
|  | 14 | **Level 10 Floor - Shop drawings** |  | 2015-03-09 | 2015-04-23 |  |  |  |  |
| SD-CS-L10-422 |  | Preparation & Submittals of SD of Plumbing & Drainage Works at L10 | 30d | 2015-03-09 | 2015-04-12 | SD-CS-L9-402 SS+7d | 68d | 0d | Shop Drawings Submittals [60 h] |
| SD-CS-L10-432 |  | Review & Approval of SD of Plumbing & Drainage Works at L10 | 30d | 2015-03-21 | 2015-04-23 | SD-CS-L10-422 SS+10d, SD-CS-L10-422 FF+10d | 181d | 66d | Shop Drawings Approval [40 h] |
|  | 15 | **Level 11 Floor - Shop drawings** |  | 2015-03-17 | 2015-05-02 |  |  |  |  |
| SD-CS-L11-442 |  | Preparation & Submittals of SD of Plumbing & Drainage Works at L11 | 30d | 2015-03-17 | 2015-04-20 | SD-CS-L10-422 SS+7d | 68d | 0d | Shop Drawings Submittals [60 h] |
| SD-CS-L11-452 |  | Review & Approval of SD of Plumbing & Drainage Works at L11 | 30d | 2015-03-29 | 2015-05-02 | SD-CS-L11-442 SS+10d, SD-CS-L11-442 FF+10d | 209d | 59d | Shop Drawings Approval [40 h] |
|  | 16 | **Level 12 Floor - Shop drawings** |  | 2015-03-25 | 2015-05-10 |  |  |  |  |
| SD-CS-L12-462 |  | Preparation & Submittals of SD of Plumbing & Drainage Works at L12 | 30d | 2015-03-25 | 2015-04-28 | SD-CS-L11-442 SS+7d | 68d | 0d | Shop Drawings Submittals [60 h] |
| SD-CS-L12-472 |  | Review & Approval of SD of Plumbing & Drainage Works at L12 | 30d | 2015-04-06 | 2015-05-10 | SD-CS-L12-462 SS+10d, SD-CS-L12-462 FF+10d | 202d | 59d | Shop Drawings Approval [40 h] |
|  | 17 | **Level 13 Floor - Shop drawings** |  | 2015-04-02 | 2015-05-18 |  |  |  |  |
| SD-CS-L13-482 |  | Preparation & Submittals of SD of Plumbing & Drainage Works at L13 | 30d | 2015-04-02 | 2015-05-06 | SD-CS-L12-462 SS+7d | 68d | 0d | Shop Drawings Submittals [60 h] |
| SD-CS-L13-492 |  | Review & Approval of SD of Plumbing & Drainage Works at L13 | 30d | 2015-04-14 | 2015-05-18 | SD-CS-L13-482 SS+10d, SD-CS-L13-482 FF+10d | 146d | 66d | Shop Drawings Approval [40 h] |
|  | 18 | **Level 14 Floor - Shop drawings** |  | 2015-04-11 | 2015-05-26 |  |  |  |  |
| SD-CS-L14-502 |  | Preparation & Submittals of SD of Plumbing & Drainage Works at L14 | 30d | 2015-04-11 | 2015-05-14 | SD-CS-L13-482 SS+7d | 68d | 0d | Shop Drawings Submittals [60 h] |
| SD-CS-L14-512 |  | Review & Approval of SD of Plumbing & Drainage Works at L14 | 30d | 2015-04-22 | 2015-05-26 | SD-CS-L14-502 SS+10d, SD-CS-L14-502 FF+10d | 169d | 59d | Shop Drawings Approval [40 h] |
|  | 19 | **Level 15 Floor - Shop drawings** |  | 2015-04-19 | 2015-06-03 |  |  |  |  |
| SD-CS-L15-522 |  | Preparation & Submittals of SD of Plumbing & Drainage Works at L15 | 30d | 2015-04-19 | 2015-05-23 | SD-CS-L14-502 SS+7d | 68d | 0d | Shop Drawings Submittals [60 h] |
| SD-CS-L15-532 |  | Review & Approval of SD of Plumbing & Drainage Works at L15 | 30d | 2015-04-30 | 2015-06-03 | SD-CS-L15-522 SS+10d, SD-CS-L15-522 FF+10d | 188d | 66d | Shop Drawings Approval [40 h] |
|  | 20 | **Level 16 Floor - Shop drawings** |  | 2015-04-27 | 2015-06-11 |  |  |  |  |
| SD-CS-L16-542 |  | Preparation & Submittals of SD of Plumbing & Drainage Works at L16 | 30d | 2015-04-27 | 2015-05-31 | SD-CS-L15-522 SS+7d | 68d | 0d | Shop Drawings Submittals [60 h] |
| SD-CS-L16-552 |  | Review & Approval of SD of Plumbing & Drainage Works at L16 | 30d | 2015-05-09 | 2015-06-11 | SD-CS-L16-542 SS+10d, SD-CS-L16-542 FF+10d | 181d | 59d | Shop Drawings Approval [40 h] |
|  | 21 | **Level 17 Floor - Shop drawings** |  | 2015-05-05 | 2015-06-20 |  |  |  |  |
| SD-CS-L17-1322 |  | Preparation & Submittals of SD of Plumbing & Drainage Works at L17 | 30d | 2015-05-05 | 2015-06-08 | SD-CS-L16-542 SS+7d | 68d | 0d | Shop Drawings Submittals [60 h] |
| SD-CS-L17-1332 |  | Review & Approval of SD of Plumbing & Drainage Works at L17 | 30d | 2015-05-17 | 2015-06-20 | SD-CS-L17-1322 SS+10d, SD-CS-L17-1322 FF+10d | 134d | 66d | Shop Drawings Approval [40 h] |

| ID | WBS | Activity | Duration | Start | Finish | Predecessors | Total float | Free float | Resources |
| --- | --- | --- | --- | --- | --- | --- | --- | --- | --- |
|  | 22 | **Level 18 Floor - Shop drawings** |  | 2015-05-13 | 2015-06-28 |  |  |  |  |
| SD-CS-L18-582 |  | Preparation & Submittals of SD of Plumbing & Drainage Works at L18 | 30d | 2015-05-13 | 2015-06-16 | SD-CS-L17-1322 SS+7d | 68d | 0d | Shop Drawings Submittals [60 h] |
| SD-CS-L18-592 |  | Review & Approval of SD of Plumbing & Drainage Works at L18 | 30d | 2015-05-25 | 2015-06-28 | SD-CS-L18-582 SS+10d, SD-CS-L18-582 FF+10d | 157d | 61d | Shop Drawings Approval [40 h] |
|  | 23 | **Level 19 Floor - Shop drawings** |  | 2015-05-21 | 2015-07-06 |  |  |  |  |
| SD-CS-L19-602 |  | Preparation & Submittals of SD of Plumbing & Drainage Works at L19 | 30d | 2015-05-21 | 2015-06-24 | SD-CS-L18-582 SS+7d | 68d | 0d | Shop Drawings Submittals [60 h] |
| SD-CS-L19-612 |  | Review & Approval of SD of Plumbing & Drainage Works at L19 | 30d | 2015-06-02 | 2015-07-06 | SD-CS-L19-602 SS+10d, SD-CS-L19-602 FF+10d | 175d | 61d | Shop Drawings Approval [40 h] |
|  | 24 | **Level 20 Floor - Shop drawings** |  | 2015-05-30 | 2015-07-14 |  |  |  |  |
| SD-CS-L20-622 |  | Preparation & Submittals of SD of Plumbing & Drainage Works at L20 | 30d | 2015-05-30 | 2015-07-02 | SD-CS-L19-602 SS+7d | 68d | 0d | Shop Drawings Submittals [60 h] |
| SD-CS-L20-632 |  | Review & Approval of SD of Plumbing & Drainage Works at L20 | 30d | 2015-06-10 | 2015-07-14 | SD-CS-L20-622 SS+10d, SD-CS-L20-622 FF+10d | 168d | 61d | Shop Drawings Approval [40 h] |
|  | 25 | **Level 21 Floor - Shop drawings** |  | 2015-06-07 | 2015-07-25 |  |  |  |  |
| SD-CS-L21-642 |  | Preparation & Submittals of SD of Plumbing & Drainage Works at L21 | 30d | 2015-06-07 | 2015-07-11 | SD-CS-L20-622 SS+7d | 68d | 0d | Shop Drawings Submittals [60 h] |
| SD-CS-L21-652 |  | Review & Approval of SD of Plumbing & Drainage Works at L21 | 30d | 2015-06-18 | 2015-07-25 | SD-CS-L21-642 SS+10d, SD-CS-L21-642 FF+10d | 122d | 68d | Shop Drawings Approval [40 h] |
|  | 26 | **Level 22 Floor - Shop drawings** |  | 2015-06-15 | 2015-08-02 |  |  |  |  |
| SD-CS-L22-662 |  | Preparation & Submittals of SD of Plumbing & Drainage Works at L22 | 30d | 2015-06-15 | 2015-07-21 | SD-CS-L21-642 SS+7d | 68d | 0d | Shop Drawings Submittals [60 h] |
| SD-CS-L22-672 |  | Review & Approval of SD of Plumbing & Drainage Works at L22 | 30d | 2015-06-27 | 2015-08-02 | SD-CS-L22-662 SS+10d, SD-CS-L22-662 FF+10d | 145d | 61d | Shop Drawings Approval [40 h] |
|  | 27 | **Level 23 Floor - Shop drawings** |  | 2015-06-23 | 2015-08-10 |  |  |  |  |
| SD-CS-L23-682 |  | Preparation & Submittals of SD of Plumbing & Drainage Works at L23 | 30d | 2015-06-23 | 2015-07-29 | SD-CS-L22-662 SS+7d | 68d | 0d | Shop Drawings Submittals [60 h] |
| SD-CS-L23-692 |  | Review & Approval of SD of Plumbing & Drainage Works at L23 | 30d | 2015-07-05 | 2015-08-10 | SD-CS-L23-682 SS+10d, SD-CS-L23-682 FF+10d | 150d | 68d | Shop Drawings Approval [40 h] |
|  | 28 | **Level 24 Floor - Shop drawings** |  | 2015-07-01 | 2015-08-18 |  |  |  |  |
| SD-CS-L24-702 |  | Preparation & Submittals of SD of Plumbing & Drainage Works at L24 | 30d | 2015-07-01 | 2015-08-06 | SD-CS-L23-682 SS+7d | 68d | 0d | Shop Drawings Submittals [60 h] |
| SD-CS-L24-712 |  | Review & Approval of SD of Plumbing & Drainage Works at L24 | 30d | 2015-07-13 | 2015-08-18 | SD-CS-L24-702 SS+10d, SD-CS-L24-702 FF+10d | 143d | 61d | Shop Drawings Approval [40 h] |
|  | 29 | **Level 25 Floor - Shop drawings** |  | 2015-07-09 | 2015-08-26 |  |  |  |  |
| SD-CS-L25-722 |  | Preparation & Submittals of SD of Plumbing & Drainage Works at L25 | 30d | 2015-07-09 | 2015-08-15 | SD-CS-L24-702 SS+7d | 68d | 0d | Shop Drawings Submittals [60 h] |
| SD-CS-L25-732 |  | Review & Approval of SD of Plumbing & Drainage Works at L25 | 30d | 2015-07-23 | 2015-08-26 | SD-CS-L25-722 SS+10d, SD-CS-L25-722 FF+10d | 110d | 57d | Shop Drawings Approval [40 h] |

| ID | WBS | Activity | Duration | Start | Finish | Predecessors | Total float | Free float | Resources |
| --- | --- | --- | --- | --- | --- | --- | --- | --- | --- |
|  | 30 | **Level 26 Floor - Shop drawings** |  | 2015-07-20 | 2015-09-03 |  |  |  |  |
| SD-CS-L26-742 |  | Preparation & Submittals of SD of Plumbing & Drainage Works at L26 | 30d | 2015-07-20 | 2015-08-23 | SD-CS-L25-722 SS+7d | 68d | 0d | Shop Drawings Submittals [60 h] |
| SD-CS-L26-752 |  | Review & Approval of SD of Plumbing & Drainage Works at L26 | 30d | 2015-08-01 | 2015-09-03 | SD-CS-L26-742 SS+10d, SD-CS-L26-742 FF+10d | 133d | 56d | Shop Drawings Approval [40 h] |
|  | 31 | **Level 27 Floor - Shop drawings** |  | 2015-07-28 | 2015-09-12 |  |  |  |  |
| SD-CS-L27-762 |  | Preparation & Submittals of SD of Plumbing & Drainage Works at L27 | 30d | 2015-07-28 | 2015-08-31 | SD-CS-L26-742 SS+7d | 68d | 0d | Shop Drawings Submittals [60 h] |
| SD-CS-L27-772 |  | Review & Approval of SD of Plumbing & Drainage Works at L27 | 30d | 2015-08-09 | 2015-09-12 | SD-CS-L27-762 SS+10d, SD-CS-L27-762 FF+10d | 137d | 55d | Shop Drawings Approval [40 h] |
|  | 32 | **Level 28 Floor - Shop drawings** |  | 2015-08-05 | 2015-09-23 |  |  |  |  |
| SD-CS-L28-782 |  | Preparation & Submittals of SD of Plumbing & Drainage Works at L28 | 30d | 2015-08-05 | 2015-09-08 | SD-CS-L27-762 SS+7d | 68d | 0d | Shop Drawings Submittals [60 h] |
| SD-CS-L28-792 |  | Review & Approval of SD of Plumbing & Drainage Works at L28 | 30d | 2015-08-17 | 2015-09-23 | SD-CS-L28-782 SS+10d, SD-CS-L28-782 FF+10d | 130d | 62d | Shop Drawings Approval [40 h] |
|  | 33 | **Level 29 Floor - Shop drawings** |  | 2015-08-13 | 2015-10-01 |  |  |  |  |
| SD-CS-L29-802 |  | Preparation & Submittals of SD of Plumbing & Drainage Works at L29 | 30d | 2015-08-13 | 2015-09-16 | SD-CS-L28-782 SS+7d | 68d | 0d | Shop Drawings Submittals [60 h] |
| SD-CS-L29-812 |  | Review & Approval of SD of Plumbing & Drainage Works at L29 | 30d | 2015-08-25 | 2015-10-01 | SD-CS-L29-802 SS+10d, SD-CS-L29-802 FF+10d | 98d | 55d | Shop Drawings Approval [40 h] |
|  | 34 | **Level 30 Floor - Shop drawings** |  | 2015-08-19 | 2015-10-07 |  |  |  |  |
| SD-CS-L30-822 |  | Preparation & Submittals of SD of Plumbing & Drainage Works at L30 | 30d | 2015-08-19 | 2015-09-26 | SD-CS-L29-802 SS+5d | 68d | 0d | Shop Drawings Submittals [60 h] |
| SD-CS-L30-832 |  | Review & Approval of SD of Plumbing & Drainage Works at L30 | 30d | 2015-08-31 | 2015-10-07 | SD-CS-L30-822 SS+10d, SD-CS-L30-822 FF+10d | 121d | 54d | Shop Drawings Approval [40 h] |
|  | 35 | **Level 31 Floor - Shop drawings** |  | 2015-08-25 | 2015-10-13 |  |  |  |  |
| SD-CS-L31-842 |  | Preparation & Submittals of SD of Plumbing & Drainage Works at L31 | 30d | 2015-08-25 | 2015-10-01 | SD-CS-L30-822 SS+5d | 68d | 0d | Shop Drawings Submittals [60 h] |
| SD-CS-L31-852 |  | Review & Approval of SD of Plumbing & Drainage Works at L31 | 30d | 2015-09-06 | 2015-10-13 | SD-CS-L31-842 SS+10d, SD-CS-L31-842 FF+10d | 116d | 63d | Shop Drawings Approval [40 h] |
|  | 36 | **Level 32 Floor - Shop drawings** |  | 2015-08-31 | 2015-10-19 |  |  |  |  |
| SD-CS-L32-862 |  | Preparation & Submittals of SD of Plumbing & Drainage Works at L32 | 30d | 2015-08-31 | 2015-10-07 | SD-CS-L31-842 SS+5d | 68d | 0d | Shop Drawings Submittals [60 h] |
| SD-CS-L32-872 |  | Review & Approval of SD of Plumbing & Drainage Works at L32 | 30d | 2015-09-12 | 2015-10-19 | SD-CS-L32-862 SS+10d, SD-CS-L32-862 FF+10d | 111d | 59d | Shop Drawings Approval [40 h] |
|  | 37 | **Level 33 Floor - Shop drawings** |  | 2015-09-06 | 2015-10-25 |  |  |  |  |
| SD-CS-L33-882 |  | Preparation & Submittals of SD of Plumbing & Drainage Works at L33 | 30d | 2015-09-06 | 2015-10-13 | SD-CS-L32-862 SS+5d | 68d | 0d | Shop Drawings Submittals [60 h] |
| SD-CS-L33-892 |  | Review & Approval of SD of Plumbing & Drainage Works at L33 | 30d | 2015-09-17 | 2015-10-25 | SD-CS-L33-882 SS+10d, SD-CS-L33-882 FF+10d | 94d | 60d | Shop Drawings Approval [40 h] |

| ID | WBS | Activity | Duration | Start | Finish | Predecessors | Total float | Free float | Resources |
| --- | --- | --- | --- | --- | --- | --- | --- | --- | --- |
|  | 38 | **Level 34 Floor - Shop drawings** |  | 2015-09-12 | 2015-10-31 |  |  |  |  |
| SD-CS-L34-902 |  | Preparation & Submittals of SD of Plumbing & Drainage Works at L34 | 30d | 2015-09-12 | 2015-10-19 | SD-CS-L33-882 SS+5d | 68d | 0d | Shop Drawings Submittals [60 h] |
| SD-CS-L34-912 |  | Review & Approval of SD of Plumbing & Drainage Works at L34 | 30d | 2015-09-27 | 2015-10-31 | SD-CS-L34-902 SS+10d, SD-CS-L34-902 FF+10d | 116d | 61d | Shop Drawings Approval [40 h] |
|  | 39 | **Level 35 Floor - Shop drawings** |  | 2015-09-17 | 2015-11-05 |  |  |  |  |
| SD-CS-L35-922 |  | Preparation & Submittals of SD of Plumbing & Drainage Works at L35 | 30d | 2015-09-17 | 2015-10-25 | SD-CS-L34-902 SS+5d | 68d | 0d | Shop Drawings Submittals [60 h] |
| SD-CS-L35-932 |  | Review & Approval of SD of Plumbing & Drainage Works at L35 | 30d | 2015-10-03 | 2015-11-05 | SD-CS-L35-922 SS+10d, SD-CS-L35-922 FF+10d | 111d | 70d | Shop Drawings Approval [40 h] |
|  | 40 | **Level 36 Floor - Shop drawings** |  | 2015-09-27 | 2015-11-11 |  |  |  |  |
| SD-CS-L36-942 |  | Preparation & Submittals of SD of Plumbing & Drainage Works at L36 | 30d | 2015-09-27 | 2015-10-31 | SD-CS-L35-922 SS+5d | 68d | 0d | Shop Drawings Submittals [60 h] |
| SD-CS-L36-952 |  | Review & Approval of SD of Plumbing & Drainage Works at L36 | 30d | 2015-10-08 | 2015-11-11 | SD-CS-L36-942 SS+10d, SD-CS-L36-942 FF+10d | 106d | 65d | Shop Drawings Approval [40 h] |
|  | 41 | **Level 37 Floor - Shop drawings** |  | 2015-10-03 | 2015-11-17 |  |  |  |  |
| SD-CS-L37-962 |  | Preparation & Submittals of SD of Plumbing & Drainage Works at L37 | 30d | 2015-10-03 | 2015-11-05 | SD-CS-L36-942 SS+5d | 68d | 0d | Shop Drawings Submittals [60 h] |
| SD-CS-L37-972 |  | Review & Approval of SD of Plumbing & Drainage Works at L37 | 30d | 2015-10-14 | 2015-11-17 | SD-CS-L37-962 SS+10d, SD-CS-L37-962 FF+10d | 90d | 64d | Shop Drawings Approval [40 h] |
|  | 42 | **Level 38 Floor - Shop drawings** |  | 2015-10-08 | 2015-11-23 |  |  |  |  |
| SD-CS-L38-982 |  | Preparation & Submittals of SD of Plumbing & Drainage Works at L38 | 30d | 2015-10-08 | 2015-11-11 | SD-CS-L37-962 SS+5d | 68d | 0d | Shop Drawings Submittals [60 h] |
| SD-CS-L38-992 |  | Review & Approval of SD of Plumbing & Drainage Works at L38 | 30d | 2015-10-20 | 2015-11-23 | SD-CS-L38-982 SS+10d, SD-CS-L38-982 FF+10d | 115d | 65d | Shop Drawings Approval [40 h] |
|  | 43 | **Level 39 Floor - Shop drawings** |  | 2015-10-14 | 2015-11-29 |  |  |  |  |
| SD-CS-L39-1002 |  | Preparation & Submittals of SD of Plumbing & Drainage Works at L39 | 30d | 2015-10-14 | 2015-11-17 | SD-CS-L38-982 SS+5d | 68d | 0d | Shop Drawings Submittals [60 h] |
| SD-CS-L39-1012 |  | Review & Approval of SD of Plumbing & Drainage Works at L39 | 30d | 2015-10-26 | 2015-11-29 | SD-CS-L39-1002 SS+10d, SD-CS-L39-1002 FF+10d | 108d | 74d | Shop Drawings Approval [40 h] |
|  | 44 | **Level 40 Floor - Shop drawings** |  | 2015-10-20 | 2015-12-05 |  |  |  |  |
| SD-CS-L40-1022 |  | Preparation & Submittals of SD of Plumbing & Drainage Works at L40 | 30d | 2015-10-20 | 2015-11-23 | SD-CS-L39-1002 SS+5d | 68d | 0d | Shop Drawings Submittals [60 h] |
| SD-CS-L40-1032 |  | Review & Approval of SD of Plumbing & Drainage Works at L40 | 30d | 2015-11-01 | 2015-12-05 | SD-CS-L40-1022 SS+10d, SD-CS-L40-1022 FF+10d | 103d | 69d | Shop Drawings Approval [40 h] |
|  | 45 | **Level 41 Floor - Shop drawings** |  | 2015-10-26 | 2015-12-10 |  |  |  |  |
| SD-CS-L41-1042 |  | Preparation & Submittals of SD of Plumbing & Drainage Works at L41 | 30d | 2015-10-26 | 2015-11-29 | SD-CS-L40-1022 SS+5d | 68d | 0d | Shop Drawings Submittals [60 h] |
| SD-CS-L41-1052 |  | Review & Approval of SD of Plumbing & Drainage Works at L41 | 30d | 2015-11-07 | 2015-12-10 | SD-CS-L41-1042 SS+10d, SD-CS-L41-1042 FF+10d | 86d | 68d | Shop Drawings Approval [40 h] |

| ID | WBS | Activity | Duration | Start | Finish | Predecessors | Total float | Free float | Resources |
| --- | --- | --- | --- | --- | --- | --- | --- | --- | --- |
|  | 46 | **Level 42 Floor - Shop drawings** |  | 2015-11-01 | 2015-12-16 |  |  |  |  |
| SD-CS-L42-1062 |  | Preparation & Submittals of SD of Plumbing & Drainage Works at L42 | 30d | 2015-11-01 | 2015-12-05 | SD-CS-L41-1042 SS+5d | 68d | 0d | Shop Drawings Submittals [60 h] |
| SD-CS-L42-1072 |  | Review & Approval of SD of Plumbing & Drainage Works at L42 | 30d | 2015-11-12 | 2015-12-16 | SD-CS-L42-1062 SS+10d, SD-CS-L42-1062 FF+10d | 96d | 77d | Shop Drawings Approval [40 h] |
|  | 47 | **Level 43 Floor - Shop drawings** |  | 2015-11-07 | 2015-12-23 |  |  |  |  |
| SD-CS-L43-1082 |  | Preparation & Submittals of SD of Plumbing & Drainage Works at L43 | 30d | 2015-11-07 | 2015-12-10 | SD-CS-L42-1062 SS+5d | 68d | 0d | Shop Drawings Submittals [60 h] |
| SD-CS-L43-1092 |  | Review & Approval of SD of Plumbing & Drainage Works at L43 | 30d | 2015-11-18 | 2015-12-23 | SD-CS-L43-1082 SS+10d, SD-CS-L43-1082 FF+10d | 90d | 72d | Shop Drawings Approval [40 h] |
|  | 48 | **Level 44 Floor - Shop drawings** |  | 2015-11-12 | 2015-12-29 |  |  |  |  |
| SD-CS-L44-1102 |  | Preparation & Submittals of SD of Plumbing & Drainage Works at L44 | 30d | 2015-11-12 | 2015-12-16 | SD-CS-L43-1082 SS+5d | 68d | 0d | Shop Drawings Submittals [60 h] |
| SD-CS-L44-1112 |  | Review & Approval of SD of Plumbing & Drainage Works at L44 | 30d | 2015-11-24 | 2015-12-29 | SD-CS-L44-1102 SS+10d, SD-CS-L44-1102 FF+10d | 101d | 71d | Shop Drawings Approval [40 h] |
|  | 49 | **Level 45 Floor - Shop drawings** |  | 2015-11-18 | 2016-01-04 |  |  |  |  |
| SD-CS-L45-1122 |  | Preparation & Submittals of SD of Plumbing & Drainage Works at L45 | 30d | 2015-11-18 | 2015-12-23 | SD-CS-L44-1102 SS+5d | 68d | 0d | Shop Drawings Submittals [60 h] |
| SD-CS-L45-1132 |  | Review & Approval of SD of Plumbing & Drainage Works at L45 | 30d | 2015-11-30 | 2016-01-04 | SD-CS-L45-1122 SS+10d, SD-CS-L45-1122 FF+10d | 82d | 79d | Shop Drawings Approval [40 h] |
|  | 50 | **Level 46 Floor - Shop drawings** |  | 2015-11-24 | 2016-01-10 |  |  |  |  |
| SD-CS-L46-1142 |  | Preparation & Submittals of SD of Plumbing & Drainage Works at L46 | 30d | 2015-11-24 | 2015-12-29 | SD-CS-L45-1122 SS+5d | 68d | 0d | Shop Drawings Submittals [60 h] |
| SD-CS-L46-1152 |  | Review & Approval of SD of Plumbing & Drainage Works at L46 | 30d | 2015-12-06 | 2016-01-10 | SD-CS-L46-1142 SS+10d, SD-CS-L46-1142 FF+10d | 96d | 75d | Shop Drawings Approval [40 h] |
|  | 53 | **Level 47 Floor - Shop drawings** |  | 2015-11-30 | 2016-01-16 |  |  |  |  |
| SD-CS-L47-1162 |  | Preparation & Submittals of SD of Plumbing & Drainage Works at L47 | 30d | 2015-11-30 | 2016-01-04 | SD-CS-L46-1142 SS+5d | 68d | 0d | Shop Drawings Submittals [60 h] |
| SD-CS-L47-1172 |  | Review & Approval of SD of Plumbing & Drainage Works at L47 | 30d | 2015-12-12 | 2016-01-16 | SD-CS-L47-1162 SS+10d, SD-CS-L47-1162 FF+10d | 86d | 74d | Shop Drawings Approval [40 h] |
|  | 51 | **Level 48 Floor - Shop drawings** |  | 2015-12-06 | 2016-01-21 |  |  |  |  |
| SD-CS-L48-1182 |  | Preparation & Submittals of SD of Plumbing & Drainage Works at L48 | 30d | 2015-12-06 | 2016-01-10 | SD-CS-L47-1162 SS+5d | 68d | 0d | Shop Drawings Submittals [60 h] |
| SD-CS-L48-1192 |  | Review & Approval of SD of Plumbing & Drainage Works at L48 | 30d | 2015-12-17 | 2016-01-21 | SD-CS-L48-1182 SS+10d, SD-CS-L48-1182 FF+10d | 81d | 70d | Shop Drawings Approval [40 h] |
|  | 52 | **Level 49 Floor - Shop drawings** |  | 2015-12-12 | 2016-01-27 |  |  |  |  |
| SD-CS-L49-1202 |  | Preparation & Submittals of SD of Plumbing & Drainage Works at L49 | 30d | 2015-12-12 | 2016-01-16 | SD-CS-L48-1182 SS+5d | 68d | 0d | Shop Drawings Submittals [60 h] |
| SD-CS-L49-1212 |  | Review & Approval of SD of Plumbing & Drainage Works at L49 | 30d | 2015-12-24 | 2016-01-27 | SD-CS-L49-1202 SS+10d, SD-CS-L49-1202 FF+10d | 80d | 77d | Shop Drawings Approval [40 h] |

| ID | WBS | Activity | Duration | Start | Finish | Predecessors | Total float | Free float | Resources |
| --- | --- | --- | --- | --- | --- | --- | --- | --- | --- |
|  | 54 | **Level 50 Floor - Shop drawings** |  | 2015-12-17 | 2016-02-02 |  |  |  |  |
| SD-CS-L50-1222 |  | Preparation & Submittals of SD of Plumbing & Drainage Works at L50 | 30d | 2015-12-17 | 2016-01-21 | SD-CS-L49-1202 SS+5d | 68d | 0d | Shop Drawings Submittals [60 h] |
| SD-CS-L50-1232 |  | Review & Approval of SD of Plumbing & Drainage Works at L50 | 30d | 2015-12-30 | 2016-02-02 | SD-CS-L50-1222 SS+10d, SD-CS-L50-1222 FF+10d | 91d | 78d | Shop Drawings Approval [40 h] |
|  | 55 | **Level 51 Floor - Shop drawings** |  | 2015-12-24 | 2016-02-08 |  |  |  |  |
| SD-CS-L51-1622 |  | Preparation & Submittals of SD of Plumbing & Drainage Works at L51 | 30d | 2015-12-24 | 2016-01-27 | SD-CS-L50-1222 SS+5d | 68d | 0d | Shop Drawings Submittals [60 h] |
| SD-CS-L51-1632 |  | Review & Approval of SD of Plumbing & Drainage Works at L51 | 30d | 2016-01-05 | 2016-02-08 | SD-CS-L51-1622 SS+10d, SD-CS-L51-1622 FF+10d | 68d | 53d | Shop Drawings Approval [40 h] |
|  | 2 | **Fire Fighting - Drawings** |  | 2014-10-14 | 2016-02-22 |  |  |  |  |
|  | R | **Basement 3 Floor level - Shop drawings** |  | 2014-10-14 | 2014-11-29 |  |  |  |  |
| SD-CS-B3-202 |  | Preparation & Submittals of SD of Fire Fighting at B3 | 30d | 2014-10-14 | 2014-11-17 | PQ-CS-C-432 | 92d | 0d | Shop Drawings Submittals [60 h] |
| SD-CS-B3-212 |  | Review & Approval of SD of Fire Fighting at B3 | 30d | 2014-10-26 | 2014-11-29 | SD-CS-B3-202 SS+10d, SD-CS-B3-202 FF+10d | 346d | 301d | Shop Drawings Approval [40 h] |
|  | 1 | **Basement 2 Floor level - Shop drawings** |  | 2014-10-21 | 2014-12-06 |  |  |  |  |
| SD-CS-B3-182 |  | Preparation & Submittals of SD of Fire Fighting at B2 | 30d | 2014-10-21 | 2014-11-24 | SD-CS-B3-202 SS+6d | 92d | 0d | Shop Drawings Submittals [60 h] |
| SD-CS-B3-192 |  | Review & Approval of SD of Fire Fighting at B2 | 30d | 2014-11-02 | 2014-12-06 | SD-CS-B3-182 SS+10d, SD-CS-B3-182 FF+10d | 336d | 310d | Shop Drawings Approval [40 h] |
|  | 2 | **Basement 1 Floor level - Shop drawings** |  | 2014-10-28 | 2014-12-13 |  |  |  |  |
| SD-CS-B2-182 |  | Preparation & Submittals of SD of Fire Fighting at B1 | 30d | 2014-10-28 | 2014-12-01 | SD-CS-B3-182 SS+6d | 92d | 0d | Shop Drawings Submittals [60 h] |
| SD-CS-B2-192 |  | Review & Approval of SD of Fire Fighting at B1 | 30d | 2014-11-09 | 2014-12-13 | SD-CS-B2-182 SS+10d, SD-CS-B2-182 FF+10d | 351d | 318d | Shop Drawings Approval [40 h] |
|  | 3 | **Ground Floor level - Shop drawings** |  | 2014-12-15 | 2015-01-31 |  |  |  |  |
| SD-CS-B1-182 |  | Preparation & Submittals of SD of Fire Fighting at GF | 30d | 2014-12-15 | 2015-01-19 | SD-CS-B2-182 SS+6d, G-CD-003 | 57d | 0d | Shop Drawings Submittals [60 h] |
| SD-CS-B1-192 |  | Review & Approval of SD of Fire Fighting at GF | 30d | 2014-12-28 | 2015-01-31 | SD-CS-B1-182 SS+10d, SD-CS-B1-182 FF+10d | 140d | 34d | Shop Drawings Approval [40 h] |
|  | 4 | **Mezzanine Floor level - Shop drawings** |  | 2014-12-23 | 2015-02-07 |  |  |  |  |
| SD-CS-GF-182 |  | Preparation & Submittals of SD of Fire Fighting at ML | 30d | 2014-12-23 | 2015-01-26 | SD-CS-B1-182 SS+6d | 57d | 0d | Shop Drawings Submittals [60 h] |
| SD-CS-GF-192 |  | Review & Approval of SD of Fire Fighting at ML | 30d | 2015-01-04 | 2015-02-07 | SD-CS-GF-182 SS+10d, SD-CS-GF-182 FF+10d | 154d | 47d | Shop Drawings Approval [40 h] |
|  | 5 | **Level 1 Floor - Shop drawings** |  | 2014-12-30 | 2015-02-15 |  |  |  |  |
| SD-CS-L1-202 |  | Preparation & Submittals of SD of Fire Fighting at L1 | 30d | 2014-12-30 | 2015-02-02 | SD-CS-GF-182 SS+6d | 152d | 0d | Shop Drawings Submittals [60 h] |
| SD-CS-L1-212 |  | Review & Approval of SD of Fire Fighting at L1 | 30d | 2015-01-11 | 2015-02-15 | SD-CS-L1-202 SS+10d, SD-CS-L1-202 FF+10d | 152d | 41d | Shop Drawings Approval [40 h] |

| ID | WBS | Activity | Duration | Start | Finish | Predecessors | Total float | Free float | Resources |
| --- | --- | --- | --- | --- | --- | --- | --- | --- | --- |
|  | 6 | **Level 2 Floor - Shop drawings** |  | 2014-12-30 | 2015-02-15 |  |  |  |  |
| SD-CS-L2-222 |  | Preparation & Submittals of SD of Fire Fighting at L2 | 30d | 2014-12-30 | 2015-02-02 | SD-CS-GF-182 SS+6d | 57d | 0d | Shop Drawings Submittals [60 h] |
| SD-CS-L2-232 |  | Review & Approval of SD of Fire Fighting at L2 | 30d | 2015-01-11 | 2015-02-15 | SD-CS-L2-222 SS+10d, SD-CS-L2-222 FF+10d | 188d | 64d | Shop Drawings Approval [40 h] |
|  | 7 | **Level 3 Floor - Shop drawings** |  | 2015-01-06 | 2015-02-22 |  |  |  |  |
| SD-CS-L3-242 |  | Preparation & Submittals of SD of Fire Fighting at L3 | 30d | 2015-01-06 | 2015-02-09 | SD-CS-L2-222 SS+6d | 57d | 0d | Shop Drawings Submittals [60 h] |
| SD-CS-L3-252 |  | Review & Approval of SD of Fire Fighting at L3 | 30d | 2015-01-18 | 2015-02-22 | SD-CS-L3-242 SS+10d, SD-CS-L3-242 FF+10d | 193d | 58d | Shop Drawings Approval [40 h] |
|  | 8 | **Level 4 Floor - Shop drawings** |  | 2015-01-13 | 2015-03-01 |  |  |  |  |
| SD-CS-L4-1262 |  | Preparation & Submittals of SD of Fire Fighting at L4 | 30d | 2015-01-13 | 2015-02-17 | SD-CS-L3-242 SS+6d | 57d | 0d | Shop Drawings Submittals [60 h] |
| SD-CS-L4-1272 |  | Review & Approval of SD of Fire Fighting at L4 | 30d | 2015-01-25 | 2015-03-01 | SD-CS-L4-1262 SS+10d, SD-CS-L4-1262 FF+10d | 190d | 75d | Shop Drawings Approval [40 h] |
|  | 9 | **Level 5 Floor - Shop drawings** |  | 2015-01-20 | 2015-03-08 |  |  |  |  |
| SD-CS-L5-282 |  | Preparation & Submittals of SD of Fire Fighting at L5 | 30d | 2015-01-20 | 2015-02-24 | SD-CS-L4-1262 SS+6d | 57d | 0d | Shop Drawings Submittals [60 h] |
| SD-CS-L5-292 |  | Review & Approval of SD of Fire Fighting at L5 | 30d | 2015-02-01 | 2015-03-08 | SD-CS-L5-282 SS+10d, SD-CS-L5-282 FF+10d | 184d | 59d | Shop Drawings Approval [40 h] |
|  | 10 | **Level 6 Floor - Shop drawings** |  | 2015-01-27 | 2015-03-15 |  |  |  |  |
| SD-CS-L6-302 |  | Preparation & Submittals of SD of Fire Fighting at L6 | 30d | 2015-01-27 | 2015-03-03 | SD-CS-L5-282 SS+6d | 57d | 0d | Shop Drawings Submittals [60 h] |
| SD-CS-L6-312 |  | Review & Approval of SD of Fire Fighting at L6 | 30d | 2015-02-08 | 2015-03-15 | SD-CS-L6-302 SS+10d, SD-CS-L6-302 FF+10d | 194d | 50d | Shop Drawings Approval [40 h] |
|  | 11 | **Level 7 Floor - Shop drawings** |  | 2015-02-03 | 2015-03-22 |  |  |  |  |
| SD-CS-L7-322 |  | Preparation & Submittals of SD of Fire Fighting at L7 | 30d | 2015-02-03 | 2015-03-10 | SD-CS-L6-302 SS+6d | 57d | 0d | Shop Drawings Submittals [60 h] |
| SD-CS-L7-332 |  | Review & Approval of SD of Fire Fighting at L7 | 30d | 2015-02-16 | 2015-03-22 | SD-CS-L7-322 SS+10d, SD-CS-L7-322 FF+10d | 211d | 51d | Shop Drawings Approval [40 h] |
|  | 12 | **Level 8 Floor - Shop drawings** |  | 2015-02-11 | 2015-03-29 |  |  |  |  |
| SD-CS-L8-342 |  | Preparation & Submittals of SD of Fire Fighting at L8 | 30d | 2015-02-11 | 2015-03-17 | SD-CS-L7-322 SS+6d | 57d | 0d | Shop Drawings Submittals [60 h] |
| SD-CS-L8-352 |  | Review & Approval of SD of Fire Fighting at L8 | 30d | 2015-02-23 | 2015-03-29 | SD-CS-L8-342 SS+10d, SD-CS-L8-342 FF+10d | 213d | 52d | Shop Drawings Approval [40 h] |
|  | 13 | **Level 9 Floor - Shop drawings** |  | 2015-02-18 | 2015-04-05 |  |  |  |  |
| SD-CS-L9-362 |  | Preparation & Submittals of SD of Fire Fighting at L9 | 30d | 2015-02-18 | 2015-03-24 | SD-CS-L8-342 SS+6d | 57d | 0d | Shop Drawings Submittals [60 h] |
| SD-CS-L9-372 |  | Review & Approval of SD of Fire Fighting at L9 | 30d | 2015-03-02 | 2015-04-05 | SD-CS-L9-362 SS+10d, SD-CS-L9-362 FF+10d | 162d | 53d | Shop Drawings Approval [40 h] |

| ID | WBS | Activity | Duration | Start | Finish | Predecessors | Total float | Free float | Resources |
| --- | --- | --- | --- | --- | --- | --- | --- | --- | --- |
|  | 14 | **Level 10 Floor - Shop drawings** |  | 2015-02-25 | 2015-04-12 |  |  |  |  |
| SD-CS-L10-382 |  | Preparation & Submittals of SD of Fire Fighting at L10 | 30d | 2015-02-25 | 2015-03-31 | SD-CS-L9-362 SS+6d | 57d | 0d | Shop Drawings Submittals [60 h] |
| SD-CS-L10-392 |  | Review & Approval of SD of Fire Fighting at L10 | 30d | 2015-03-09 | 2015-04-12 | SD-CS-L10-382 SS+10d, SD-CS-L10-382 FF+10d | 186d | 62d | Shop Drawings Approval [40 h] |
|  | 15 | **Level 11 Floor - Shop drawings** |  | 2015-03-04 | 2015-04-19 |  |  |  |  |
| SD-CS-L11-402 |  | Preparation & Submittals of SD of Fire Fighting at L11 | 30d | 2015-03-04 | 2015-04-07 | SD-CS-L10-382 SS+6d | 57d | 0d | Shop Drawings Submittals [60 h] |
| SD-CS-L11-412 |  | Review & Approval of SD of Fire Fighting at L11 | 30d | 2015-03-16 | 2015-04-19 | SD-CS-L11-402 SS+10d, SD-CS-L11-402 FF+10d | 215d | 55d | Shop Drawings Approval [40 h] |
|  | 16 | **Level 12 Floor - Shop drawings** |  | 2015-03-11 | 2015-04-26 |  |  |  |  |
| SD-CS-L12-422 |  | Preparation & Submittals of SD of Fire Fighting at L12 | 30d | 2015-03-11 | 2015-04-14 | SD-CS-L11-402 SS+6d | 57d | 0d | Shop Drawings Submittals [60 h] |
| SD-CS-L12-432 |  | Review & Approval of SD of Fire Fighting at L12 | 30d | 2015-03-23 | 2015-04-26 | SD-CS-L12-422 SS+10d, SD-CS-L12-422 FF+10d | 209d | 56d | Shop Drawings Approval [40 h] |
|  | 17 | **Level 13 Floor - Shop drawings** |  | 2015-03-18 | 2015-05-03 |  |  |  |  |
| SD-CS-L13-442 |  | Preparation & Submittals of SD of Fire Fighting at L13 | 30d | 2015-03-18 | 2015-04-21 | SD-CS-L12-422 SS+6d | 57d | 0d | Shop Drawings Submittals [60 h] |
| SD-CS-L13-452 |  | Review & Approval of SD of Fire Fighting at L13 | 30d | 2015-03-30 | 2015-05-03 | SD-CS-L13-442 SS+10d, SD-CS-L13-442 FF+10d | 154d | 64d | Shop Drawings Approval [40 h] |
|  | 18 | **Level 14 Floor - Shop drawings** |  | 2015-03-25 | 2015-05-10 |  |  |  |  |
| SD-CS-L14-462 |  | Preparation & Submittals of SD of Fire Fighting at L14 | 30d | 2015-03-25 | 2015-04-28 | SD-CS-L13-442 SS+6d | 57d | 0d | Shop Drawings Submittals [60 h] |
| SD-CS-L14-472 |  | Review & Approval of SD of Fire Fighting at L14 | 30d | 2015-04-06 | 2015-05-10 | SD-CS-L14-462 SS+10d, SD-CS-L14-462 FF+10d | 178d | 58d | Shop Drawings Approval [40 h] |
|  | 19 | **Level 15 Floor - Shop drawings** |  | 2015-04-01 | 2015-05-17 |  |  |  |  |
| SD-CS-L15-482 |  | Preparation & Submittals of SD of Fire Fighting at L15 | 30d | 2015-04-01 | 2015-05-05 | SD-CS-L14-462 SS+6d | 57d | 0d | Shop Drawings Submittals [60 h] |
| SD-CS-L15-492 |  | Review & Approval of SD of Fire Fighting at L15 | 30d | 2015-04-13 | 2015-05-17 | SD-CS-L15-482 SS+10d, SD-CS-L15-482 FF+10d | 198d | 66d | Shop Drawings Approval [40 h] |
|  | 20 | **Level 16 Floor - Shop drawings** |  | 2015-04-08 | 2015-05-24 |  |  |  |  |
| SD-CS-L16-502 |  | Preparation & Submittals of SD of Fire Fighting at L16 | 30d | 2015-04-08 | 2015-05-12 | SD-CS-L15-482 SS+6d | 57d | 0d | Shop Drawings Submittals [60 h] |
| SD-CS-L16-512 |  | Review & Approval of SD of Fire Fighting at L16 | 30d | 2015-04-20 | 2015-05-24 | SD-CS-L16-502 SS+10d, SD-CS-L16-502 FF+10d | 192d | 60d | Shop Drawings Approval [40 h] |
|  | 21 | **Level 17 Floor - Shop drawings** |  | 2015-04-15 | 2015-05-31 |  |  |  |  |
| SD-CS-L17-1282 |  | Preparation & Submittals of SD of Fire Fighting at L17 | 30d | 2015-04-15 | 2015-05-19 | SD-CS-L16-502 SS+6d | 57d | 0d | Shop Drawings Submittals [60 h] |
| SD-CS-L17-1292 |  | Review & Approval of SD of Fire Fighting at L17 | 30d | 2015-04-27 | 2015-05-31 | SD-CS-L17-1282 SS+10d, SD-CS-L17-1282 FF+10d | 146d | 68d | Shop Drawings Approval [40 h] |

| ID | WBS | Activity | Duration | Start | Finish | Predecessors | Total float | Free float | Resources |
| --- | --- | --- | --- | --- | --- | --- | --- | --- | --- |
|  | 22 | **Level 18 Floor - Shop drawings** |  | 2015-04-22 | 2015-06-07 |  |  |  |  |
| SD-CS-L18-542 |  | Preparation & Submittals of SD of Fire Fightingat L18 | 30d | 2015-04-22 | 2015-05-26 | SD-CS-L17-1282 SS+6d | 57d | 0d | Shop Drawings Submittals [60 h] |
| SD-CS-L18-552 |  | Review & Approval of SD of Fire Fighting at L18 | 30d | 2015-05-04 | 2015-06-07 | SD-CS-L18-542 SS+10d, SD-CS-L18-542 FF+10d | 170d | 64d | Shop Drawings Approval [40 h] |
|  | 23 | **Level 19 Floor - Shop drawings** |  | 2015-04-29 | 2015-06-14 |  |  |  |  |
| SD-CS-L19-562 |  | Preparation & Submittals of SD of Fire Fighting at L19 | 30d | 2015-04-29 | 2015-06-02 | SD-CS-L18-542 SS+6d | 57d | 0d | Shop Drawings Submittals [60 h] |
| SD-CS-L19-572 |  | Review & Approval of SD of Fire Fighting at L19 | 30d | 2015-05-11 | 2015-06-14 | SD-CS-L19-562 SS+10d, SD-CS-L19-562 FF+10d | 189d | 65d | Shop Drawings Approval [40 h] |
|  | 24 | **Level 20 Floor - Shop drawings** |  | 2015-05-06 | 2015-06-21 |  |  |  |  |
| SD-CS-L20-582 |  | Preparation & Submittals of SD of Fire Fighting at L20 | 30d | 2015-05-06 | 2015-06-09 | SD-CS-L19-562 SS+6d | 57d | 0d | Shop Drawings Submittals [60 h] |
| SD-CS-L20-592 |  | Review & Approval of SD of Fire Fighting at L20 | 30d | 2015-05-18 | 2015-06-21 | SD-CS-L20-582 SS+10d, SD-CS-L20-582 FF+10d | 183d | 66d | Shop Drawings Approval [40 h] |
|  | 25 | **Level 21 Floor - Shop drawings** |  | 2015-05-13 | 2015-06-28 |  |  |  |  |
| SD-CS-L21-602 |  | Preparation & Submittals of SD of Fire Fighting at L21 | 30d | 2015-05-13 | 2015-06-16 | SD-CS-L20-582 SS+6d | 57d | 0d | Shop Drawings Submittals [60 h] |
| SD-CS-L21-612 |  | Review & Approval of SD of Fire Fighting at L21 | 30d | 2015-05-25 | 2015-06-28 | SD-CS-L21-602 SS+10d, SD-CS-L21-602 FF+10d | 138d | 74d | Shop Drawings Approval [40 h] |
|  | 26 | **Level 22 Floor - Shop drawings** |  | 2015-05-20 | 2015-07-05 |  |  |  |  |
| SD-CS-L22-622 |  | Preparation & Submittals of SD of Fire Fighting at L22 | 30d | 2015-05-20 | 2015-06-23 | SD-CS-L21-602 SS+6d | 57d | 0d | Shop Drawings Submittals [60 h] |
| SD-CS-L22-632 |  | Review & Approval of SD of Fire Fighting at L22 | 30d | 2015-06-01 | 2015-07-05 | SD-CS-L22-622 SS+10d, SD-CS-L22-622 FF+10d | 162d | 68d | Shop Drawings Approval [40 h] |
|  | 27 | **Level 23 Floor - Shop drawings** |  | 2015-05-27 | 2015-07-12 |  |  |  |  |
| SD-CS-L23-642 |  | Preparation & Submittals of SD of Fire Fighting at L23 | 30d | 2015-05-27 | 2015-06-30 | SD-CS-L22-622 SS+6d | 57d | 0d | Shop Drawings Submittals [60 h] |
| SD-CS-L23-652 |  | Review & Approval of SD of Fire Fighting at L23 | 30d | 2015-06-08 | 2015-07-12 | SD-CS-L23-642 SS+10d, SD-CS-L23-642 FF+10d | 168d | 76d | Shop Drawings Approval [40 h] |
|  | 28 | **Level 24 Floor - Shop drawings** |  | 2015-06-03 | 2015-07-21 |  |  |  |  |
| SD-CS-L24-662 |  | Preparation & Submittals of SD of Fire Fighting at L24 | 30d | 2015-06-03 | 2015-07-07 | SD-CS-L23-642 SS+6d | 57d | 0d | Shop Drawings Submittals [60 h] |
| SD-CS-L24-672 |  | Review & Approval of SD of Fire Fighting at L24 | 30d | 2015-06-15 | 2015-07-21 | SD-CS-L24-662 SS+10d, SD-CS-L24-662 FF+10d | 162d | 70d | Shop Drawings Approval [40 h] |
|  | 29 | **Level 25 Floor - Shop drawings** |  | 2015-06-10 | 2015-07-28 |  |  |  |  |
| SD-CS-L25-682 |  | Preparation & Submittals of SD of Fire Fighting at L25 | 30d | 2015-06-10 | 2015-07-14 | SD-CS-L24-662 SS+6d | 57d | 0d | Shop Drawings Submittals [60 h] |
| SD-CS-L25-692 |  | Review & Approval of SD of Fire Fighting at L25 | 30d | 2015-06-22 | 2015-07-28 | SD-CS-L25-682 SS+10d, SD-CS-L25-682 FF+10d | 130d | 67d | Shop Drawings Approval [40 h] |

| ID | WBS | Activity | Duration | Start | Finish | Predecessors | Total float | Free float | Resources |
| --- | --- | --- | --- | --- | --- | --- | --- | --- | --- |
|  | 30 | **Level 26 Floor - Shop drawings** |  | 2015-06-17 | 2015-08-04 |  |  |  |  |
| SD-CS-L26-702 |  | Preparation & Submittals of SD of Fire Fighting at L26 | 30d | 2015-06-17 | 2015-07-23 | SD-CS-L25-682 SS+6d | 57d | 0d | Shop Drawings Submittals [60 h] |
| SD-CS-L26-712 |  | Review & Approval of SD of Fire Fighting at L26 | 30d | 2015-06-29 | 2015-08-04 | SD-CS-L26-702 SS+10d, SD-CS-L26-702 FF+10d | 154d | 67d | Shop Drawings Approval [40 h] |
|  | 31 | **Level 27 Floor - Shop drawings** |  | 2015-06-24 | 2015-08-11 |  |  |  |  |
| SD-CS-L27-722 |  | Preparation & Submittals of SD of Fire Fighting at L27 | 30d | 2015-06-24 | 2015-07-30 | SD-CS-L26-702 SS+6d | 57d | 0d | Shop Drawings Submittals [60 h] |
| SD-CS-L27-732 |  | Review & Approval of SD of Fire Fighting at L27 | 30d | 2015-07-06 | 2015-08-11 | SD-CS-L27-722 SS+10d, SD-CS-L27-722 FF+10d | 159d | 67d | Shop Drawings Approval [40 h] |
|  | 32 | **Level 28 Floor - Shop drawings** |  | 2015-07-01 | 2015-08-18 |  |  |  |  |
| SD-CS-L28-742 |  | Preparation & Submittals of SD of Fire Fighting at L28 | 30d | 2015-07-01 | 2015-08-06 | SD-CS-L27-722 SS+6d | 57d | 0d | Shop Drawings Submittals [60 h] |
| SD-CS-L28-752 |  | Review & Approval of SD of Fire Fighting at L28 | 30d | 2015-07-13 | 2015-08-18 | SD-CS-L28-742 SS+10d, SD-CS-L28-742 FF+10d | 153d | 75d | Shop Drawings Approval [40 h] |
|  | 33 | **Level 29 Floor - Shop drawings** |  | 2015-07-09 | 2015-08-26 |  |  |  |  |
| SD-CS-L29-762 |  | Preparation & Submittals of SD of Fire Fighting at L29 | 30d | 2015-07-09 | 2015-08-15 | SD-CS-L28-742 SS+7d | 57d | 0d | Shop Drawings Submittals [60 h] |
| SD-CS-L29-772 |  | Review & Approval of SD of Fire Fighting at L29 | 30d | 2015-07-23 | 2015-08-26 | SD-CS-L29-762 SS+10d, SD-CS-L29-762 FF+10d | 121d | 68d | Shop Drawings Approval [40 h] |
|  | 34 | **Level 30 Floor - Shop drawings** |  | 2015-07-20 | 2015-09-03 |  |  |  |  |
| SD-CS-L30-782 |  | Preparation & Submittals of SD of Fire Fighting at L30 | 30d | 2015-07-20 | 2015-08-23 | SD-CS-L29-762 SS+7d | 57d | 0d | Shop Drawings Submittals [60 h] |
| SD-CS-L30-792 |  | Review & Approval of SD of Fire Fighting at L30 | 30d | 2015-08-01 | 2015-09-03 | SD-CS-L30-782 SS+10d, SD-CS-L30-782 FF+10d | 142d | 65d | Shop Drawings Approval [40 h] |
|  | 35 | **Level 31 Floor - Shop drawings** |  | 2015-07-28 | 2015-09-12 |  |  |  |  |
| SD-CS-L31-802 |  | Preparation & Submittals of SD of Fire Fighting at L31 | 30d | 2015-07-28 | 2015-08-31 | SD-CS-L30-782 SS+7d | 57d | 0d | Shop Drawings Submittals [60 h] |
| SD-CS-L31-812 |  | Review & Approval of SD of Fire Fighting at L31 | 30d | 2015-08-09 | 2015-09-12 | SD-CS-L31-802 SS+10d, SD-CS-L31-802 FF+10d | 135d | 72d | Shop Drawings Approval [40 h] |
|  | 36 | **Level 32 Floor - Shop drawings** |  | 2015-08-05 | 2015-09-23 |  |  |  |  |
| SD-CS-L32-822 |  | Preparation & Submittals of SD of Fire Fighting at L32 | 30d | 2015-08-05 | 2015-09-08 | SD-CS-L31-802 SS+7d | 57d | 0d | Shop Drawings Submittals [60 h] |
| SD-CS-L32-832 |  | Review & Approval of SD of Fire Fighting at L32 | 30d | 2015-08-17 | 2015-09-23 | SD-CS-L32-822 SS+10d, SD-CS-L32-822 FF+10d | 128d | 66d | Shop Drawings Approval [40 h] |
|  | 37 | **Level 33 Floor - Shop drawings** |  | 2015-08-13 | 2015-10-01 |  |  |  |  |
| SD-CS-L33-842 |  | Preparation & Submittals of SD of Fire Fighting at L33 | 30d | 2015-08-13 | 2015-09-16 | SD-CS-L32-822 SS+7d | 57d | 0d | Shop Drawings Submittals [60 h] |
| SD-CS-L33-852 |  | Review & Approval of SD of Fire Fighting at L33 | 30d | 2015-08-25 | 2015-10-01 | SD-CS-L33-842 SS+10d, SD-CS-L33-842 FF+10d | 109d | 65d | Shop Drawings Approval [40 h] |

| ID | WBS | Activity | Duration | Start | Finish | Predecessors | Total float | Free float | Resources |
| --- | --- | --- | --- | --- | --- | --- | --- | --- | --- |
|  | 38 | **Level 34 Floor - Shop drawings** |  | 2015-08-22 | 2015-10-10 |  |  |  |  |
| SD-CS-L34-862 |  | Preparation & Submittals of SD of Fire Fighting at L34 | 30d | 2015-08-22 | 2015-09-28 | SD-CS-L33-842 SS+7d | 57d | 0d | Shop Drawings Submittals [60 h] |
| SD-CS-L34-872 |  | Review & Approval of SD of Fire Fighting at L34 | 30d | 2015-09-02 | 2015-10-10 | SD-CS-L34-862 SS+10d, SD-CS-L34-862 FF+10d | 129d | 64d | Shop Drawings Approval [40 h] |
|  | 39 | **Level 35 Floor - Shop drawings** |  | 2015-08-30 | 2015-10-18 |  |  |  |  |
| SD-CS-L35-882 |  | Preparation & Submittals of SD of Fire Fighting at L35 | 30d | 2015-08-30 | 2015-10-06 | SD-CS-L34-862 SS+7d | 57d | 0d | Shop Drawings Submittals [60 h] |
| SD-CS-L35-892 |  | Review & Approval of SD of Fire Fighting at L35 | 30d | 2015-09-10 | 2015-10-18 | SD-CS-L35-882 SS+10d, SD-CS-L35-882 FF+10d | 122d | 71d | Shop Drawings Approval [40 h] |
|  | 40 | **Level 36 Floor - Shop drawings** |  | 2015-09-07 | 2015-10-26 |  |  |  |  |
| SD-CS-L36-902 |  | Preparation & Submittals of SD of Fire Fighting at L36 | 30d | 2015-09-07 | 2015-10-14 | SD-CS-L35-882 SS+7d | 57d | 0d | Shop Drawings Submittals [60 h] |
| SD-CS-L36-912 |  | Review & Approval of SD of Fire Fighting at L36 | 30d | 2015-09-19 | 2015-10-26 | SD-CS-L36-902 SS+10d, SD-CS-L36-902 FF+10d | 115d | 64d | Shop Drawings Approval [40 h] |
|  | 41 | **Level 37 Floor - Shop drawings** |  | 2015-09-15 | 2015-11-03 |  |  |  |  |
| SD-CS-L37-922 |  | Preparation & Submittals of SD of Fire Fighting at L37 | 30d | 2015-09-15 | 2015-10-22 | SD-CS-L36-902 SS+7d | 57d | 0d | Shop Drawings Submittals [60 h] |
| SD-CS-L37-932 |  | Review & Approval of SD of Fire Fighting at L37 | 30d | 2015-09-30 | 2015-11-03 | SD-CS-L37-922 SS+10d, SD-CS-L37-922 FF+10d | 97d | 61d | Shop Drawings Approval [40 h] |
|  | 42 | **Level 38 Floor - Shop drawings** |  | 2015-09-27 | 2015-11-11 |  |  |  |  |
| SD-CS-L38-942 |  | Preparation & Submittals of SD of Fire Fighting at L38 | 30d | 2015-09-27 | 2015-10-31 | SD-CS-L37-922 SS+7d | 57d | 0d | Shop Drawings Submittals [60 h] |
| SD-CS-L38-952 |  | Review & Approval of SD of Fire Fighting at L38 | 30d | 2015-10-08 | 2015-11-11 | SD-CS-L38-942 SS+10d, SD-CS-L38-942 FF+10d | 120d | 60d | Shop Drawings Approval [40 h] |
|  | 43 | **Level 39 Floor - Shop drawings** |  | 2015-10-05 | 2015-11-19 |  |  |  |  |
| SD-CS-L39-962 |  | Preparation & Submittals of SD of Fire Fighting at L39 | 30d | 2015-10-05 | 2015-11-08 | SD-CS-L38-942 SS+7d | 57d | 0d | Shop Drawings Submittals [60 h] |
| SD-CS-L39-972 |  | Review & Approval of SD of Fire Fighting at L39 | 30d | 2015-10-17 | 2015-11-19 | SD-CS-L39-962 SS+10d, SD-CS-L39-962 FF+10d | 111d | 67d | Shop Drawings Approval [40 h] |
|  | 44 | **Level 40 Floor - Shop drawings** |  | 2015-10-13 | 2015-11-28 |  |  |  |  |
| SD-CS-L40-982 |  | Preparation & Submittals of SD of Fire Fighting at L40 | 30d | 2015-10-13 | 2015-11-16 | SD-CS-L39-962 SS+7d | 57d | 0d | Shop Drawings Submittals [60 h] |
| SD-CS-L40-992 |  | Review & Approval of SD of Fire Fighting at L40 | 30d | 2015-10-25 | 2015-11-28 | SD-CS-L40-982 SS+10d, SD-CS-L40-982 FF+10d | 104d | 60d | Shop Drawings Approval [40 h] |
|  | 45 | **Level 41 Floor - Shop drawings** |  | 2015-10-21 | 2015-12-06 |  |  |  |  |
| SD-CS-L41-1002 |  | Preparation & Submittals of SD of Fire Fighting at L41 | 30d | 2015-10-21 | 2015-11-24 | SD-CS-L40-982 SS+7d | 57d | 0d | Shop Drawings Submittals [60 h] |
| SD-CS-L41-1012 |  | Review & Approval of SD of Fire Fighting at L41 | 30d | 2015-11-02 | 2015-12-06 | SD-CS-L41-1002 SS+10d, SD-CS-L41-1002 FF+10d | 85d | 57d | Shop Drawings Approval [40 h] |

| ID | WBS | Activity | Duration | Start | Finish | Predecessors | Total float | Free float | Resources |
| --- | --- | --- | --- | --- | --- | --- | --- | --- | --- |
|  | 46 | **Level 42 Floor - Shop drawings** |  | 2015-10-29 | 2015-12-14 |  |  |  |  |
| SD-CS-L42-1022 |  | Preparation & Submittals of SD of Fire Fighting at L42 | 30d | 2015-10-29 | 2015-12-02 | SD-CS-L41-1002 SS+7d | 57d | 0d | Shop Drawings Submittals [60 h] |
| SD-CS-L42-1032 |  | Review & Approval of SD of Fire Fighting at L42 | 30d | 2015-11-10 | 2015-12-14 | SD-CS-L42-1022 SS+10d, SD-CS-L42-1022 FF+10d | 93d | 64d | Shop Drawings Approval [40 h] |
|  | 47 | **Level 43 Floor - Shop drawings** |  | 2015-11-07 | 2015-12-23 |  |  |  |  |
| SD-CS-L43-1042 |  | Preparation & Submittals of SD of Fire Fighting at L43 | 30d | 2015-11-07 | 2015-12-10 | SD-CS-L42-1022 SS+7d | 57d | 0d | Shop Drawings Submittals [60 h] |
| SD-CS-L43-1052 |  | Review & Approval of SD of Fire Fighting at L43 | 30d | 2015-11-18 | 2015-12-23 | SD-CS-L43-1042 SS+10d, SD-CS-L43-1042 FF+10d | 85d | 57d | Shop Drawings Approval [40 h] |
|  | 48 | **Level 44 Floor - Shop drawings** |  | 2015-11-15 | 2015-12-31 |  |  |  |  |
| SD-CS-L44-1062 |  | Preparation & Submittals of SD of Fire Fighting at L44 | 30d | 2015-11-15 | 2015-12-20 | SD-CS-L43-1042 SS+7d | 57d | 0d | Shop Drawings Submittals [60 h] |
| SD-CS-L44-1072 |  | Review & Approval of SD of Fire Fighting at L44 | 30d | 2015-11-26 | 2015-12-31 | SD-CS-L44-1062 SS+10d, SD-CS-L44-1062 FF+10d | 94d | 54d | Shop Drawings Approval [40 h] |
|  | 49 | **Level 45 Floor - Shop drawings** |  | 2015-11-23 | 2016-01-09 |  |  |  |  |
| SD-CS-L45-1082 |  | Preparation & Submittals of SD of Fire Fighting at L45 | 30d | 2015-11-23 | 2015-12-28 | SD-CS-L44-1062 SS+7d | 57d | 0d | Shop Drawings Submittals [60 h] |
| SD-CS-L45-1092 |  | Review & Approval of SD of Fire Fighting at L45 | 30d | 2015-12-05 | 2016-01-09 | SD-CS-L45-1082 SS+10d, SD-CS-L45-1082 FF+10d | 73d | 61d | Shop Drawings Approval [40 h] |
|  | 50 | **Level 46 Floor - Shop drawings** |  | 2015-12-01 | 2016-01-17 |  |  |  |  |
| SD-CS-L46-1102 |  | Preparation & Submittals of SD of Fire Fighting at L46 | 30d | 2015-12-01 | 2016-01-05 | SD-CS-L45-1082 SS+7d | 57d | 0d | Shop Drawings Submittals [60 h] |
| SD-CS-L46-1112 |  | Review & Approval of SD of Fire Fighting at L46 | 30d | 2015-12-13 | 2016-01-17 | SD-CS-L46-1102 SS+10d, SD-CS-L46-1102 FF+10d | 85d | 54d | Shop Drawings Approval [40 h] |
|  | 53 | **Level 47 Floor - Shop drawings** |  | 2015-12-09 | 2016-01-25 |  |  |  |  |
| SD-CS-L47-1122 |  | Preparation & Submittals of SD of Fire Fighting at L47 | 30d | 2015-12-09 | 2016-01-13 | SD-CS-L46-1102 SS+7d | 57d | 0d | Shop Drawings Submittals [60 h] |
| SD-CS-L47-1132 |  | Review & Approval of SD of Fire Fighting at L47 | 30d | 2015-12-22 | 2016-01-25 | SD-CS-L47-1122 SS+10d, SD-CS-L47-1122 FF+10d | 73d | 51d | Shop Drawings Approval [40 h] |
|  | 51 | **Level 48 Floor - Shop drawings** |  | 2015-12-17 | 2016-02-02 |  |  |  |  |
| SD-CS-L48-1142 |  | Preparation & Submittals of SD of Fire Fighting at L48 | 30d | 2015-12-17 | 2016-01-21 | SD-CS-L47-1122 SS+7d | 57d | 0d | Shop Drawings Submittals [60 h] |
| SD-CS-L48-1152 |  | Review & Approval of SD of Fire Fighting at L48 | 30d | 2015-12-30 | 2016-02-02 | SD-CS-L48-1142 SS+10d, SD-CS-L48-1142 FF+10d | 66d | 50d | Shop Drawings Approval [40 h] |
|  | 52 | **Level 49 Floor - Shop drawings** |  | 2015-12-27 | 2016-02-11 |  |  |  |  |
| SD-CS-L49-1162 |  | Preparation & Submittals of SD of Fire Fighting at L49 | 30d | 2015-12-27 | 2016-01-30 | SD-CS-L48-1142 SS+7d | 57d | 0d | Shop Drawings Submittals [60 h] |
| SD-CS-L49-1172 |  | Review & Approval of SD of Fire Fighting at L49 | 30d | 2016-01-07 | 2016-02-11 | SD-CS-L49-1162 SS+10d, SD-CS-L49-1162 FF+10d | 61d | 50d | Shop Drawings Approval [40 h] |

| ID | WBS | Activity | Duration | Start | Finish | Predecessors | Total float | Free float | Resources |
| --- | --- | --- | --- | --- | --- | --- | --- | --- | --- |
|  | 54 | **Level 50 Floor - Shop drawings** |  | 2016-01-04 | 2016-02-20 |  |  |  |  |
| SD-CS-L50-1182 |  | Preparation & Submittals of SD of Fire Fighting at L50 | 30d | 2016-01-04 | 2016-02-07 | SD-CS-L49-1162 SS+7d | 57d | 0d | Shop Drawings Submittals [60 h] |
| SD-CS-L50-1192 |  | Review & Approval of SD of Fire Fighting at L50 | 30d | 2016-01-16 | 2016-02-20 | SD-CS-L50-1182 SS+10d, SD-CS-L50-1182 FF+10d | 72d | 49d | Shop Drawings Approval [40 h] |
|  | 55 | **Level 51 Floor - Shop drawings** |  | 2016-01-12 | 2016-02-22 |  |  |  |  |
| SD-CS-L51-1502 |  | Preparation & Submittals of SD of Fire Fighting at L51 | 25d | 2016-01-12 | 2016-02-09 | SD-CS-L50-1182 SS+7d | 57d | 0d | Shop Drawings Submittals [60 h] |
| SD-CS-L51-1512 |  | Review & Approval of SD of Fire Fighting at L51 | 25d | 2016-01-24 | 2016-02-22 | SD-CS-L51-1502 SS+10d, SD-CS-L51-1502 FF+10d | 57d | 42d | Shop Drawings Approval [40 h] |
|  | 6 | **BMS system** |  | 2014-12-30 | 2016-03-07 |  |  |  |  |
|  | R | **Basement 3 Floor level - Shop drawings** |  | 2014-12-30 | 2015-02-15 |  |  |  |  |
| SD-CS-B3-562 |  | Preparation & Submittals of SD of BMS system Drawings at B3 | 30d | 2014-12-30 | 2015-02-02 | PQ-CS-C-492, PQ-CS-C-512 | 102d | 0d | Shop Drawings Submittals [60 h] |
| SD-CS-B3-572 |  | Review & Approval of SD of BMS system Drawings at B3 | 30d | 2015-01-11 | 2015-02-15 | SD-CS-B3-562 SS+10d, SD-CS-B3-562 FF+10d | 385d | 251d | Shop Drawings Approval [40 h] |
|  | 1 | **Basement 2 Floor level - Shop drawings** |  | 2015-01-06 | 2015-02-22 |  |  |  |  |
| SD-CS-B3-542 |  | Preparation & Submittals of SD of BMS system Drawings at B2 | 30d | 2015-01-06 | 2015-02-09 | SD-CS-B3-562 SS+6d | 102d | 0d | Shop Drawings Submittals [60 h] |
| SD-CS-B3-552 |  | Review & Approval of SD of BMS system Drawings at B2 | 30d | 2015-01-18 | 2015-02-22 | SD-CS-B3-542 SS+10d, SD-CS-B3-542 FF+10d | 315d | 265d | Shop Drawings Approval [40 h] |
|  | 2 | **Basement 1 Floor level - Shop drawings** |  | 2015-01-13 | 2015-03-01 |  |  |  |  |
| SD-CS-B2-362 |  | Preparation & Submittals of SD of BMS system Drawings at B1 | 30d | 2015-01-13 | 2015-02-17 | SD-CS-B3-542 SS+6d | 102d | 0d | Shop Drawings Submittals [60 h] |
| SD-CS-B2-372 |  | Review & Approval of SD of BMS system Drawings at B1 | 30d | 2015-01-25 | 2015-03-01 | SD-CS-B2-362 SS+10d, SD-CS-B2-362 FF+10d | 334d | 279d | Shop Drawings Approval [40 h] |
|  | 3 | **Ground Floor level - Shop drawings** |  | 2015-01-20 | 2015-03-08 |  |  |  |  |
| SD-CS-B1-362 |  | Preparation & Submittals of SD of BMS system Drawings at GF | 30d | 2015-01-20 | 2015-02-24 | SD-CS-B2-362 SS+6d | 102d | 0d | Shop Drawings Submittals [60 h] |
| SD-CS-B1-372 |  | Review & Approval of SD of BMS system Drawings at GF | 30d | 2015-02-01 | 2015-03-08 | SD-CS-B1-362 SS+10d, SD-CS-B1-362 FF+10d | 134d | 15d | Shop Drawings Approval [40 h] |
|  | 4 | **Mezzanine Floor level - Shop drawings** |  | 2015-01-27 | 2015-03-15 |  |  |  |  |
| SD-CS-GF-362 |  | Preparation & Submittals of SD of BMS system Drawings at ML | 30d | 2015-01-27 | 2015-03-03 | SD-CS-B1-362 SS+6d | 102d | 0d | Shop Drawings Submittals [60 h] |
| SD-CS-GF-372 |  | Review & Approval of SD of BMS system Drawings at ML | 30d | 2015-02-08 | 2015-03-15 | SD-CS-GF-362 SS+10d, SD-CS-GF-362 FF+10d | 148d | 29d | Shop Drawings Approval [40 h] |
|  | 5 | **Level 1 Floor - Shop drawings** |  | 2015-02-03 | 2015-03-22 |  |  |  |  |
| SD-CS-L1-382 |  | Preparation & Submittals of SD of BMS system Drawings at L1 | 30d | 2015-02-03 | 2015-03-10 | SD-CS-GF-362 SS+6d | 162d | 0d | Shop Drawings Submittals [60 h] |
| SD-CS-L1-392 |  | Review & Approval of SD of BMS system Drawings at L1 | 30d | 2015-02-16 | 2015-03-22 | SD-CS-L1-382 SS+10d, SD-CS-L1-382 FF+10d | 162d | 43d | Shop Drawings Approval [40 h] |

| ID | WBS | Activity | Duration | Start | Finish | Predecessors | Total float | Free float | Resources |
| --- | --- | --- | --- | --- | --- | --- | --- | --- | --- |
|  | 6 | **Level 2 Floor - Shop drawings** |  | 2015-02-03 | 2015-03-22 |  |  |  |  |
| SD-CS-L2-402 |  | Preparation & Submittals of SD of BMS system Drawings at L2 | 30d | 2015-02-03 | 2015-03-10 | SD-CS-GF-362 SS+6d | 102d | 0d | Shop Drawings Submittals [60 h] |
| SD-CS-L2-412 |  | Review & Approval of SD of BMS system Drawings at L2 | 30d | 2015-02-16 | 2015-03-22 | SD-CS-L2-402 SS+10d, SD-CS-L2-402 FF+10d | 202d | 83d | Shop Drawings Approval [40 h] |
|  | 7 | **Level 3 Floor - Shop drawings** |  | 2015-02-11 | 2015-03-29 |  |  |  |  |
| SD-CS-L3-422 |  | Preparation & Submittals of SD of BMS system Drawings at L3 | 30d | 2015-02-11 | 2015-03-17 | SD-CS-L2-402 SS+6d | 102d | 0d | Shop Drawings Submittals [60 h] |
| SD-CS-L3-432 |  | Review & Approval of SD of BMS system Drawings at L3 | 30d | 2015-02-23 | 2015-03-29 | SD-CS-L3-422 SS+10d, SD-CS-L3-422 FF+10d | 216d | 97d | Shop Drawings Approval [40 h] |
|  | 8 | **Level 4 Floor - Shop drawings** |  | 2015-02-18 | 2015-04-05 |  |  |  |  |
| SD-CS-L4-1442 |  | Preparation & Submittals of SD of BMS system Drawings at L4 | 30d | 2015-02-18 | 2015-03-24 | SD-CS-L3-422 SS+6d | 102d | 0d | Shop Drawings Submittals [60 h] |
| SD-CS-L4-1452 |  | Review & Approval of SD of BMS system Drawings at L4 | 30d | 2015-03-02 | 2015-04-05 | SD-CS-L4-1442 SS+10d, SD-CS-L4-1442 FF+10d | 210d | 91d | Shop Drawings Approval [40 h] |
|  | 9 | **Level 5 Floor - Shop drawings** |  | 2015-02-25 | 2015-04-12 |  |  |  |  |
| SD-CS-L5-462 |  | Preparation & Submittals of SD of BMS system Drawings at L5 | 30d | 2015-02-25 | 2015-03-31 | SD-CS-L4-1442 SS+6d | 102d | 0d | Shop Drawings Submittals [60 h] |
| SD-CS-L5-472 |  | Review & Approval of SD of BMS system Drawings at L5 | 30d | 2015-03-09 | 2015-04-12 | SD-CS-L5-462 SS+10d, SD-CS-L5-462 FF+10d | 204d | 85d | Shop Drawings Approval [40 h] |
|  | 10 | **Level 6 Floor - Shop drawings** |  | 2015-03-04 | 2015-04-19 |  |  |  |  |
| SD-CS-L6-482 |  | Preparation & Submittals of SD of BMS system Drawings at L6 | 30d | 2015-03-04 | 2015-04-07 | SD-CS-L5-462 SS+6d | 102d | 0d | Shop Drawings Submittals [60 h] |
| SD-CS-L6-492 |  | Review & Approval of SD of BMS system Drawings at L6 | 30d | 2015-03-16 | 2015-04-19 | SD-CS-L6-482 SS+10d, SD-CS-L6-482 FF+10d | 218d | 99d | Shop Drawings Approval [40 h] |
|  | 11 | **Level 7 Floor - Shop drawings** |  | 2015-03-11 | 2015-04-26 |  |  |  |  |
| SD-CS-L7-502 |  | Preparation & Submittals of SD of BMS system Drawings at L7 | 30d | 2015-03-11 | 2015-04-14 | SD-CS-L6-482 SS+6d | 102d | 0d | Shop Drawings Submittals [60 h] |
| SD-CS-L7-512 |  | Review & Approval of SD of BMS system Drawings at L7 | 30d | 2015-03-23 | 2015-04-26 | SD-CS-L7-502 SS+10d, SD-CS-L7-502 FF+10d | 212d | 93d | Shop Drawings Approval [40 h] |
|  | 12 | **Level 8 Floor - Shop drawings** |  | 2015-03-18 | 2015-05-03 |  |  |  |  |
| SD-CS-L8-522 |  | Preparation & Submittals of SD of BMS system Drawings at L8 | 30d | 2015-03-18 | 2015-04-21 | SD-CS-L7-502 SS+6d | 102d | 0d | Shop Drawings Submittals [60 h] |
| SD-CS-L8-532 |  | Review & Approval of SD of BMS system Drawings at L8 | 30d | 2015-03-30 | 2015-05-03 | SD-CS-L8-522 SS+10d, SD-CS-L8-522 FF+10d | 206d | 87d | Shop Drawings Approval [40 h] |
|  | 13 | **Level 9 Floor - Shop drawings** |  | 2015-03-25 | 2015-05-10 |  |  |  |  |
| SD-CS-L9-542 |  | Preparation & Submittals of SD of BMS system Drawings at L9 | 30d | 2015-03-25 | 2015-04-28 | SD-CS-L8-522 SS+6d | 102d | 0d | Shop Drawings Submittals [60 h] |
| SD-CS-L9-552 |  | Review & Approval of SD of BMS system Drawings at L9 | 30d | 2015-04-06 | 2015-05-10 | SD-CS-L9-542 SS+10d, SD-CS-L9-542 FF+10d | 200d | 81d | Shop Drawings Approval [40 h] |

| ID | WBS | Activity | Duration | Start | Finish | Predecessors | Total float | Free float | Resources |
| --- | --- | --- | --- | --- | --- | --- | --- | --- | --- |
|  | 14 | **Level 10 Floor - Shop drawings** |  | 2015-04-01 | 2015-05-17 |  |  |  |  |
| SD-CS-L10-562 |  | Preparation & Submittals of SD of BMS system Drawings at L10 | 30d | 2015-04-01 | 2015-05-05 | SD-CS-L9-542 SS+6d | 102d | 0d | Shop Drawings Submittals [60 h] |
| SD-CS-L10-572 |  | Review & Approval of SD of BMS system Drawings at L10 | 30d | 2015-04-13 | 2015-05-17 | SD-CS-L10-562 SS+10d, SD-CS-L10-562 FF+10d | 194d | 75d | Shop Drawings Approval [40 h] |
|  | 15 | **Level 11 Floor - Shop drawings** |  | 2015-04-08 | 2015-05-24 |  |  |  |  |
| SD-CS-L11-582 |  | Preparation & Submittals of SD of BMS system Drawings at L11 | 30d | 2015-04-08 | 2015-05-12 | SD-CS-L10-562 SS+6d | 102d | 0d | Shop Drawings Submittals [60 h] |
| SD-CS-L11-592 |  | Review & Approval of SD of BMS system Drawings at L11 | 30d | 2015-04-20 | 2015-05-24 | SD-CS-L11-582 SS+10d, SD-CS-L11-582 FF+10d | 188d | 69d | Shop Drawings Approval [40 h] |
|  | 16 | **Level 12 Floor - Shop drawings** |  | 2015-04-15 | 2015-05-31 |  |  |  |  |
| SD-CS-L12-602 |  | Preparation & Submittals of SD of BMS system Drawings at L12 | 30d | 2015-04-15 | 2015-05-19 | SD-CS-L11-582 SS+6d | 102d | 0d | Shop Drawings Submittals [60 h] |
| SD-CS-L12-612 |  | Review & Approval of SD of BMS system Drawings at L12 | 30d | 2015-04-27 | 2015-05-31 | SD-CS-L12-602 SS+10d, SD-CS-L12-602 FF+10d | 182d | 63d | Shop Drawings Approval [40 h] |
|  | 17 | **Level 13 Floor - Shop drawings** |  | 2015-04-22 | 2015-06-07 |  |  |  |  |
| SD-CS-L13-622 |  | Preparation & Submittals of SD of BMS system Drawings at L13 | 30d | 2015-04-22 | 2015-05-26 | SD-CS-L12-602 SS+6d | 102d | 0d | Shop Drawings Submittals [60 h] |
| SD-CS-L13-632 |  | Review & Approval of SD of BMS system Drawings at L13 | 30d | 2015-05-04 | 2015-06-07 | SD-CS-L13-622 SS+10d, SD-CS-L13-622 FF+10d | 196d | 77d | Shop Drawings Approval [40 h] |
|  | 18 | **Level 14 Floor - Shop drawings** |  | 2015-04-29 | 2015-06-14 |  |  |  |  |
| SD-CS-L14-642 |  | Preparation & Submittals of SD of BMS system Drawings at L14 | 30d | 2015-04-29 | 2015-06-02 | SD-CS-L13-622 SS+6d | 102d | 0d | Shop Drawings Submittals [60 h] |
| SD-CS-L14-652 |  | Review & Approval of SD of BMS system Drawings at L14 | 30d | 2015-05-11 | 2015-06-14 | SD-CS-L14-642 SS+10d, SD-CS-L14-642 FF+10d | 190d | 71d | Shop Drawings Approval [40 h] |
|  | 19 | **Level 15 Floor - Shop drawings** |  | 2015-05-06 | 2015-06-21 |  |  |  |  |
| SD-CS-L15-662 |  | Preparation & Submittals of SD of BMS system Drawings at L15 | 30d | 2015-05-06 | 2015-06-09 | SD-CS-L14-642 SS+6d | 102d | 0d | Shop Drawings Submittals [60 h] |
| SD-CS-L15-672 |  | Review & Approval of SD of BMS system Drawings at L15 | 30d | 2015-05-18 | 2015-06-21 | SD-CS-L15-662 SS+10d, SD-CS-L15-662 FF+10d | 184d | 65d | Shop Drawings Approval [40 h] |
|  | 20 | **Level 16 Floor - Shop drawings** |  | 2015-05-13 | 2015-06-28 |  |  |  |  |
| SD-CS-L16-682 |  | Preparation & Submittals of SD of BMS system Drawings at L16 | 30d | 2015-05-13 | 2015-06-16 | SD-CS-L15-662 SS+6d | 102d | 0d | Shop Drawings Submittals [60 h] |
| SD-CS-L16-692 |  | Review & Approval of SD of BMS system Drawings at L16 | 30d | 2015-05-25 | 2015-06-28 | SD-CS-L16-682 SS+10d, SD-CS-L16-682 FF+10d | 178d | 59d | Shop Drawings Approval [40 h] |
|  | 21 | **Level 17 Floor - Shop drawings** |  | 2015-05-20 | 2015-07-05 |  |  |  |  |
| SD-CS-L17-1462 |  | Preparation & Submittals of SD of BMS system Drawings at L17 | 30d | 2015-05-20 | 2015-06-23 | SD-CS-L16-682 SS+6d | 102d | 0d | Shop Drawings Submittals [60 h] |
| SD-CS-L17-1472 |  | Review & Approval of SD of BMS system Drawings at L17 | 30d | 2015-06-01 | 2015-07-05 | SD-CS-L17-1462 SS+10d, SD-CS-L17-1462 FF+10d | 172d | 53d | Shop Drawings Approval [40 h] |

| ID | WBS | Activity | Duration | Start | Finish | Predecessors | Total float | Free float | Resources |
| --- | --- | --- | --- | --- | --- | --- | --- | --- | --- |
|  | 22 | **Level 18 Floor - Shop drawings** |  | 2015-05-27 | 2015-07-12 |  |  |  |  |
| SD-CS-L18-722 |  | Preparation & Submittals of SD of BMS system Drawings at L18 | 30d | 2015-05-27 | 2015-06-30 | SD-CS-L17-1462 SS+6d | 102d | 0d | Shop Drawings Submittals [60 h] |
| SD-CS-L18-732 |  | Review & Approval of SD of BMS system Drawings at L18 | 30d | 2015-06-08 | 2015-07-12 | SD-CS-L18-722 SS+10d, SD-CS-L18-722 FF+10d | 166d | 49d | Shop Drawings Approval [40 h] |
|  | 23 | **Level 19 Floor - Shop drawings** |  | 2015-06-03 | 2015-07-21 |  |  |  |  |
| SD-CS-L19-742 |  | Preparation & Submittals of SD of BMS system Drawings at L19 | 30d | 2015-06-03 | 2015-07-07 | SD-CS-L18-722 SS+6d | 102d | 0d | Shop Drawings Submittals [60 h] |
| SD-CS-L19-752 |  | Review & Approval of SD of BMS system Drawings at L19 | 30d | 2015-06-15 | 2015-07-21 | SD-CS-L19-742 SS+10d, SD-CS-L19-742 FF+10d | 160d | 50d | Shop Drawings Approval [40 h] |
|  | 24 | **Level 20 Floor - Shop drawings** |  | 2015-06-10 | 2015-07-28 |  |  |  |  |
| SD-CS-L20-762 |  | Preparation & Submittals of SD of BMS system Drawings at L20 | 30d | 2015-06-10 | 2015-07-14 | SD-CS-L19-742 SS+6d | 102d | 0d | Shop Drawings Submittals [60 h] |
| SD-CS-L20-772 |  | Review & Approval of SD of BMS system Drawings at L20 | 30d | 2015-06-22 | 2015-07-28 | SD-CS-L20-762 SS+10d, SD-CS-L20-762 FF+10d | 174d | 64d | Shop Drawings Approval [40 h] |
|  | 25 | **Level 21 Floor - Shop drawings** |  | 2015-06-17 | 2015-08-04 |  |  |  |  |
| SD-CS-L21-782 |  | Preparation & Submittals of SD of BMS system Drawings at L21 | 30d | 2015-06-17 | 2015-07-23 | SD-CS-L20-762 SS+6d | 102d | 0d | Shop Drawings Submittals [60 h] |
| SD-CS-L21-792 |  | Review & Approval of SD of BMS system Drawings at L21 | 30d | 2015-06-29 | 2015-08-04 | SD-CS-L21-782 SS+10d, SD-CS-L21-782 FF+10d | 168d | 59d | Shop Drawings Approval [40 h] |
|  | 26 | **Level 22 Floor - Shop drawings** |  | 2015-06-24 | 2015-08-11 |  |  |  |  |
| SD-CS-L22-802 |  | Preparation & Submittals of SD of BMS system Drawings at L22 | 30d | 2015-06-24 | 2015-07-30 | SD-CS-L21-782 SS+6d | 102d | 0d | Shop Drawings Submittals [60 h] |
| SD-CS-L22-812 |  | Review & Approval of SD of BMS system Drawings at L22 | 30d | 2015-07-06 | 2015-08-11 | SD-CS-L22-802 SS+10d, SD-CS-L22-802 FF+10d | 162d | 53d | Shop Drawings Approval [40 h] |
|  | 27 | **Level 23 Floor - Shop drawings** |  | 2015-07-01 | 2015-08-18 |  |  |  |  |
| SD-CS-L23-822 |  | Preparation & Submittals of SD of BMS system Drawings at L23 | 30d | 2015-07-01 | 2015-08-06 | SD-CS-L22-802 SS+6d | 102d | 0d | Shop Drawings Submittals [60 h] |
| SD-CS-L23-832 |  | Review & Approval of SD of BMS system Drawings at L23 | 30d | 2015-07-13 | 2015-08-18 | SD-CS-L23-822 SS+10d, SD-CS-L23-822 FF+10d | 156d | 61d | Shop Drawings Approval [40 h] |
|  | 28 | **Level 24 Floor - Shop drawings** |  | 2015-07-08 | 2015-08-25 |  |  |  |  |
| SD-CS-L24-842 |  | Preparation & Submittals of SD of BMS system Drawings at L24 | 30d | 2015-07-08 | 2015-08-13 | SD-CS-L23-822 SS+6d | 102d | 0d | Shop Drawings Submittals [60 h] |
| SD-CS-L24-852 |  | Review & Approval of SD of BMS system Drawings at L24 | 30d | 2015-07-22 | 2015-08-25 | SD-CS-L24-842 SS+10d, SD-CS-L24-842 FF+10d | 150d | 55d | Shop Drawings Approval [40 h] |
|  | 29 | **Level 25 Floor - Shop drawings** |  | 2015-07-18 | 2015-09-01 |  |  |  |  |
| SD-CS-L25-862 |  | Preparation & Submittals of SD of BMS system Drawings at L25 | 30d | 2015-07-18 | 2015-08-20 | SD-CS-L24-842 SS+6d | 102d | 0d | Shop Drawings Submittals [60 h] |
| SD-CS-L25-872 |  | Review & Approval of SD of BMS system Drawings at L25 | 30d | 2015-07-29 | 2015-09-01 | SD-CS-L25-862 SS+10d, SD-CS-L25-862 FF+10d | 144d | 52d | Shop Drawings Approval [40 h] |

| ID | WBS | Activity | Duration | Start | Finish | Predecessors | Total float | Free float | Resources |
| --- | --- | --- | --- | --- | --- | --- | --- | --- | --- |
|  | 30 | **Level 26 Floor - Shop drawings** |  | 2015-07-25 | 2015-09-08 |  |  |  |  |
| SD-CS-L26-882 |  | Preparation & Submittals of SD of BMS system Drawings at L26 | 30d | 2015-07-25 | 2015-08-27 | SD-CS-L25-862 SS+6d | 102d | 0d | Shop Drawings Submittals [60 h] |
| SD-CS-L26-892 |  | Review & Approval of SD of BMS system Drawings at L26 | 30d | 2015-08-05 | 2015-09-08 | SD-CS-L26-882 SS+10d, SD-CS-L26-882 FF+10d | 158d | 66d | Shop Drawings Approval [40 h] |
|  | 31 | **Level 27 Floor - Shop drawings** |  | 2015-08-01 | 2015-09-15 |  |  |  |  |
| SD-CS-L27-902 |  | Preparation & Submittals of SD of BMS system Drawings at L27 | 30d | 2015-08-01 | 2015-09-03 | SD-CS-L26-882 SS+6d | 102d | 0d | Shop Drawings Submittals [60 h] |
| SD-CS-L27-912 |  | Review & Approval of SD of BMS system Drawings at L27 | 30d | 2015-08-12 | 2015-09-15 | SD-CS-L27-902 SS+10d, SD-CS-L27-902 FF+10d | 152d | 60d | Shop Drawings Approval [40 h] |
|  | 32 | **Level 28 Floor - Shop drawings** |  | 2015-08-08 | 2015-09-26 |  |  |  |  |
| SD-CS-L28-922 |  | Preparation & Submittals of SD of BMS system Drawings at L28 | 30d | 2015-08-08 | 2015-09-10 | SD-CS-L27-902 SS+6d | 102d | 0d | Shop Drawings Submittals [60 h] |
| SD-CS-L28-932 |  | Review & Approval of SD of BMS system Drawings at L28 | 30d | 2015-08-19 | 2015-09-26 | SD-CS-L28-922 SS+10d, SD-CS-L28-922 FF+10d | 146d | 60d | Shop Drawings Approval [40 h] |
|  | 33 | **Level 29 Floor - Shop drawings** |  | 2015-08-15 | 2015-10-03 |  |  |  |  |
| SD-CS-L29-942 |  | Preparation & Submittals of SD of BMS system Drawings at L29 | 30d | 2015-08-15 | 2015-09-17 | SD-CS-L28-922 SS+6d | 102d | 0d | Shop Drawings Submittals [60 h] |
| SD-CS-L29-952 |  | Review & Approval of SD of BMS system Drawings at L29 | 30d | 2015-08-26 | 2015-10-03 | SD-CS-L29-942 SS+10d, SD-CS-L29-942 FF+10d | 140d | 54d | Shop Drawings Approval [40 h] |
|  | 34 | **Level 30 Floor - Shop drawings** |  | 2015-08-22 | 2015-10-10 |  |  |  |  |
| SD-CS-L30-962 |  | Preparation & Submittals of SD of BMS system Drawings at L30 | 30d | 2015-08-22 | 2015-09-28 | SD-CS-L29-942 SS+6d | 102d | 0d | Shop Drawings Submittals [60 h] |
| SD-CS-L30-972 |  | Review & Approval of SD of BMS system Drawings at L30 | 30d | 2015-09-02 | 2015-10-10 | SD-CS-L30-962 SS+10d, SD-CS-L30-962 FF+10d | 134d | 52d | Shop Drawings Approval [40 h] |
|  | 35 | **Level 31 Floor - Shop drawings** |  | 2015-08-29 | 2015-10-17 |  |  |  |  |
| SD-CS-L31-982 |  | Preparation & Submittals of SD of BMS system Drawings at L31 | 30d | 2015-08-29 | 2015-10-05 | SD-CS-L30-962 SS+6d | 102d | 0d | Shop Drawings Submittals [60 h] |
| SD-CS-L31-992 |  | Review & Approval of SD of BMS system Drawings at L31 | 30d | 2015-09-09 | 2015-10-17 | SD-CS-L31-982 SS+10d, SD-CS-L31-982 FF+10d | 128d | 60d | Shop Drawings Approval [40 h] |
|  | 36 | **Level 32 Floor - Shop drawings** |  | 2015-09-05 | 2015-10-24 |  |  |  |  |
| SD-CS-L32-1002 |  | Preparation & Submittals of SD of BMS system Drawings at L32 | 30d | 2015-09-05 | 2015-10-12 | SD-CS-L31-982 SS+6d | 102d | 0d | Shop Drawings Submittals [60 h] |
| SD-CS-L32-1012 |  | Review & Approval of SD of BMS system Drawings at L32 | 30d | 2015-09-16 | 2015-10-24 | SD-CS-L32-1002 SS+10d, SD-CS-L32-1002 FF+10d | 142d | 74d | Shop Drawings Approval [40 h] |
|  | 37 | **Level 33 Floor - Shop drawings** |  | 2015-09-12 | 2015-10-31 |  |  |  |  |
| SD-CS-L33-1022 |  | Preparation & Submittals of SD of BMS system Drawings at L33 | 30d | 2015-09-12 | 2015-10-19 | SD-CS-L32-1002 SS+6d | 102d | 0d | Shop Drawings Submittals [60 h] |
| SD-CS-L33-1032 |  | Review & Approval of SD of BMS system Drawings at L33 | 30d | 2015-09-27 | 2015-10-31 | SD-CS-L33-1022 SS+10d, SD-CS-L33-1022 FF+10d | 136d | 68d | Shop Drawings Approval [40 h] |

| ID | WBS | Activity | Duration | Start | Finish | Predecessors | Total float | Free float | Resources |
| --- | --- | --- | --- | --- | --- | --- | --- | --- | --- |
|  | 38 | **Level 34 Floor - Shop drawings** |  | 2015-09-19 | 2015-11-07 |  |  |  |  |
| SD-CS-L34-1042 |  | Preparation & Submittals of SD of BMS system Drawings at L34 | 30d | 2015-09-19 | 2015-10-26 | SD-CS-L33-1022 SS+6d | 102d | 0d | Shop Drawings Submittals [60 h] |
| SD-CS-L34-1052 |  | Review & Approval of SD of BMS system Drawings at L34 | 30d | 2015-10-04 | 2015-11-07 | SD-CS-L34-1042 SS+10d, SD-CS-L34-1042 FF+10d | 144d | 62d | Shop Drawings Approval [40 h] |
|  | 39 | **Level 35 Floor - Shop drawings** |  | 2015-09-29 | 2015-11-14 |  |  |  |  |
| SD-CS-L35-1062 |  | Preparation & Submittals of SD of BMS system Drawings at L35 | 30d | 2015-09-29 | 2015-11-02 | SD-CS-L34-1042 SS+6d | 102d | 0d | Shop Drawings Submittals [60 h] |
| SD-CS-L35-1072 |  | Review & Approval of SD of BMS system Drawings at L35 | 30d | 2015-10-11 | 2015-11-14 | SD-CS-L35-1062 SS+10d, SD-CS-L35-1062 FF+10d | 138d | 63d | Shop Drawings Approval [40 h] |
|  | 40 | **Level 36 Floor - Shop drawings** |  | 2015-10-06 | 2015-11-21 |  |  |  |  |
| SD-CS-L36-1082 |  | Preparation & Submittals of SD of BMS system Drawings at L36 | 30d | 2015-10-06 | 2015-11-09 | SD-CS-L35-1062 SS+6d | 102d | 0d | Shop Drawings Submittals [60 h] |
| SD-CS-L36-1092 |  | Review & Approval of SD of BMS system Drawings at L36 | 30d | 2015-10-18 | 2015-11-21 | SD-CS-L36-1082 SS+10d, SD-CS-L36-1082 FF+10d | 132d | 57d | Shop Drawings Approval [40 h] |
|  | 41 | **Level 37 Floor - Shop drawings** |  | 2015-10-13 | 2015-11-28 |  |  |  |  |
| SD-CS-L37-1102 |  | Preparation & Submittals of SD of BMS system Drawings at L37 | 30d | 2015-10-13 | 2015-11-16 | SD-CS-L36-1082 SS+6d | 102d | 0d | Shop Drawings Submittals [60 h] |
| SD-CS-L37-1112 |  | Review & Approval of SD of BMS system Drawings at L37 | 30d | 2015-10-25 | 2015-11-28 | SD-CS-L37-1102 SS+10d, SD-CS-L37-1102 FF+10d | 126d | 55d | Shop Drawings Approval [40 h] |
|  | 42 | **Level 38 Floor - Shop drawings** |  | 2015-10-20 | 2015-12-05 |  |  |  |  |
| SD-CS-L38-1122 |  | Preparation & Submittals of SD of BMS system Drawings at L38 | 30d | 2015-10-20 | 2015-11-23 | SD-CS-L37-1102 SS+6d | 102d | 0d | Shop Drawings Submittals [60 h] |
| SD-CS-L38-1132 |  | Review & Approval of SD of BMS system Drawings at L38 | 30d | 2015-11-01 | 2015-12-05 | SD-CS-L38-1122 SS+10d, SD-CS-L38-1122 FF+10d | 140d | 69d | Shop Drawings Approval [40 h] |
|  | 43 | **Level 39 Floor - Shop drawings** |  | 2015-10-27 | 2015-12-12 |  |  |  |  |
| SD-CS-L39-1142 |  | Preparation & Submittals of SD of BMS system Drawings at L39 | 30d | 2015-10-27 | 2015-11-30 | SD-CS-L38-1122 SS+6d | 102d | 0d | Shop Drawings Submittals [60 h] |
| SD-CS-L39-1152 |  | Review & Approval of SD of BMS system Drawings at L39 | 30d | 2015-11-08 | 2015-12-12 | SD-CS-L39-1142 SS+10d, SD-CS-L39-1142 FF+10d | 135d | 63d | Shop Drawings Approval [40 h] |
|  | 44 | **Level 40 Floor - Shop drawings** |  | 2015-11-03 | 2015-12-20 |  |  |  |  |
| SD-CS-L40-1162 |  | Preparation & Submittals of SD of BMS system Drawings at L40 | 30d | 2015-11-03 | 2015-12-07 | SD-CS-L39-1142 SS+6d | 102d | 0d | Shop Drawings Submittals [60 h] |
| SD-CS-L40-1172 |  | Review & Approval of SD of BMS system Drawings at L40 | 30d | 2015-11-15 | 2015-12-20 | SD-CS-L40-1162 SS+10d, SD-CS-L40-1162 FF+10d | 129d | 57d | Shop Drawings Approval [40 h] |
|  | 45 | **Level 41 Floor - Shop drawings** |  | 2015-11-10 | 2015-12-27 |  |  |  |  |
| SD-CS-L41-1182 |  | Preparation & Submittals of SD of BMS system Drawings at L41 | 30d | 2015-11-10 | 2015-12-14 | SD-CS-L40-1162 SS+6d | 102d | 0d | Shop Drawings Submittals [60 h] |
| SD-CS-L41-1192 |  | Review & Approval of SD of BMS system Drawings at L41 | 30d | 2015-11-22 | 2015-12-27 | SD-CS-L41-1182 SS+10d, SD-CS-L41-1182 FF+10d | 123d | 55d | Shop Drawings Approval [40 h] |

| ID | WBS | Activity | Duration | Start | Finish | Predecessors | Total float | Free float | Resources |
| --- | --- | --- | --- | --- | --- | --- | --- | --- | --- |
|  | 46 | **Level 42 Floor - Shop drawings** |  | 2015-11-17 | 2016-01-03 |  |  |  |  |
| SD-CS-L42-1202 |  | Preparation & Submittals of SD of BMS system Drawings at L42 | 30d | 2015-11-17 | 2015-12-22 | SD-CS-L41-1182 SS+6d | 102d | 0d | Shop Drawings Submittals [60 h] |
| SD-CS-L42-1212 |  | Review & Approval of SD of BMS system Drawings at L42 | 30d | 2015-11-29 | 2016-01-03 | SD-CS-L42-1202 SS+10d, SD-CS-L42-1202 FF+10d | 117d | 63d | Shop Drawings Approval [40 h] |
|  | 47 | **Level 43 Floor - Shop drawings** |  | 2015-11-24 | 2016-01-10 |  |  |  |  |
| SD-CS-L43-1222 |  | Preparation & Submittals of SD of BMS system Drawings at L43 | 30d | 2015-11-24 | 2015-12-29 | SD-CS-L42-1202 SS+6d | 102d | 0d | Shop Drawings Submittals [60 h] |
| SD-CS-L43-1232 |  | Review & Approval of SD of BMS system Drawings at L43 | 30d | 2015-12-06 | 2016-01-10 | SD-CS-L43-1222 SS+10d, SD-CS-L43-1222 FF+10d | 111d | 57d | Shop Drawings Approval [40 h] |
|  | 48 | **Level 44 Floor - Shop drawings** |  | 2015-12-01 | 2016-01-17 |  |  |  |  |
| SD-CS-L44-1242 |  | Preparation & Submittals of SD of BMS system Drawings at L44 | 30d | 2015-12-01 | 2016-01-05 | SD-CS-L43-1222 SS+6d | 102d | 0d | Shop Drawings Submittals [60 h] |
| SD-CS-L44-1252 |  | Review & Approval of SD of BMS system Drawings at L44 | 30d | 2015-12-13 | 2016-01-17 | SD-CS-L44-1242 SS+10d, SD-CS-L44-1242 FF+10d | 105d | 55d | Shop Drawings Approval [40 h] |
|  | 49 | **Level 45 Floor - Shop drawings** |  | 2015-12-08 | 2016-01-24 |  |  |  |  |
| SD-CS-L45-1262 |  | Preparation & Submittals of SD of BMS system Drawings at L45 | 30d | 2015-12-08 | 2016-01-12 | SD-CS-L44-1242 SS+6d | 102d | 0d | Shop Drawings Submittals [60 h] |
| SD-CS-L45-1272 |  | Review & Approval of SD of BMS system Drawings at L45 | 30d | 2015-12-21 | 2016-01-24 | SD-CS-L45-1262 SS+10d, SD-CS-L45-1262 FF+10d | 119d | 69d | Shop Drawings Approval [40 h] |
|  | 50 | **Level 46 Floor - Shop drawings** |  | 2015-12-15 | 2016-01-31 |  |  |  |  |
| SD-CS-L46-1282 |  | Preparation & Submittals of SD of BMS system Drawings at L46 | 30d | 2015-12-15 | 2016-01-19 | SD-CS-L45-1262 SS+6d | 102d | 0d | Shop Drawings Submittals [60 h] |
| SD-CS-L46-1292 |  | Review & Approval of SD of BMS system Drawings at L46 | 30d | 2015-12-28 | 2016-01-31 | SD-CS-L46-1282 SS+10d, SD-CS-L46-1282 FF+10d | 113d | 63d | Shop Drawings Approval [40 h] |
|  | 53 | **Level 47 Floor - Shop drawings** |  | 2015-12-23 | 2016-02-07 |  |  |  |  |
| SD-CS-L47-1302 |  | Preparation & Submittals of SD of BMS system Drawings at L47 | 30d | 2015-12-23 | 2016-01-26 | SD-CS-L46-1282 SS+6d | 102d | 0d | Shop Drawings Submittals [60 h] |
| SD-CS-L47-1312 |  | Review & Approval of SD of BMS system Drawings at L47 | 30d | 2016-01-04 | 2016-02-07 | SD-CS-L47-1302 SS+10d, SD-CS-L47-1302 FF+10d | 107d | 57d | Shop Drawings Approval [40 h] |
|  | 51 | **Level 48 Floor - Shop drawings** |  | 2015-12-30 | 2016-02-15 |  |  |  |  |
| SD-CS-L48-1322 |  | Preparation & Submittals of SD of BMS system Drawings at L48 | 30d | 2015-12-30 | 2016-02-02 | SD-CS-L47-1302 SS+6d | 102d | 0d | Shop Drawings Submittals [60 h] |
| SD-CS-L48-1332 |  | Review & Approval of SD of BMS system Drawings at L48 | 30d | 2016-01-11 | 2016-02-15 | SD-CS-L48-1322 SS+10d, SD-CS-L48-1322 FF+10d | 107d | 51d | Shop Drawings Approval [40 h] |
|  | 52 | **Level 49 Floor - Shop drawings** |  | 2016-01-06 | 2016-02-22 |  |  |  |  |
| SD-CS-L49-1342 |  | Preparation & Submittals of SD of BMS system Drawings at L49 | 30d | 2016-01-06 | 2016-02-09 | SD-CS-L48-1322 SS+6d | 102d | 0d | Shop Drawings Submittals [60 h] |
| SD-CS-L49-1352 |  | Review & Approval of SD of BMS system Drawings at L49 | 30d | 2016-01-18 | 2016-02-22 | SD-CS-L49-1342 SS+10d, SD-CS-L49-1342 FF+10d | 107d | 56d | Shop Drawings Approval [40 h] |

| ID | WBS | Activity | Duration | Start | Finish | Predecessors | Total float | Free float | Resources |
| --- | --- | --- | --- | --- | --- | --- | --- | --- | --- |
|  | 54 | **Level 50 Floor - Shop drawings** |  | 2016-01-13 | 2016-02-29 |  |  |  |  |
| SD-CS-L50-1362 |  | Preparation & Submittals of SD of BMS system Drawings at L50 | 30d | 2016-01-13 | 2016-02-17 | SD-CS-L49-1342 SS+6d | 102d | 0d | Shop Drawings Submittals [60 h] |
| SD-CS-L50-1372 |  | Review & Approval of SD of BMS system Drawings at L50 | 30d | 2016-01-25 | 2016-02-29 | SD-CS-L50-1362 SS+10d, SD-CS-L50-1362 FF+10d | 104d | 56d | Shop Drawings Approval [40 h] |
|  | 55 | **Level 51 Floor - Shop drawings** |  | 2016-01-20 | 2016-03-07 |  |  |  |  |
| SD-CS-L51-2042 |  | Preparation & Submittals of SD of BMS system Drawings at L51 | 30d | 2016-01-20 | 2016-02-24 | SD-CS-L50-1362 SS+6d | 102d | 0d | Shop Drawings Submittals [60 h] |
| SD-CS-L51-2052 |  | Review & Approval of SD of BMS system Drawings at L51 | 30d | 2016-02-01 | 2016-03-07 | SD-CS-L51-2042 SS+10d, SD-CS-L51-2042 FF+10d | 102d | 50d | Shop Drawings Approval [40 h] |
|  | 7 | **Gas System** |  | 2015-02-03 | 2015-03-22 |  |  |  |  |
| SD-CS-B3-1242 |  | Preparation & Submittals of SD of Gas System | 30d | 2015-02-03 | 2015-03-10 | PQ-CS-C-532, G-CD-003 | 115d | 0d | Shop Drawings Submittals [60 h] |
| SD-CS-B3-1252 |  | Review & Approval of SD of Gas System | 30d | 2015-02-16 | 2015-03-22 | SD-CS-B3-1242 SS+10d, SD-CS-B3-1242 FF+10d | 115d | 53d | Shop Drawings Approval [40 h] |
|  | 5 | **ELV systems** |  | 2014-11-24 | 2016-03-21 |  |  |  |  |
|  | 1 | **Room Management System** |  | 2014-11-24 | 2016-01-31 |  |  |  |  |
|  | R | **Basement 3 Floor level - Shop drawings** |  | 2014-11-24 | 2015-01-10 |  |  |  |  |
| SD-CS-B3-642 |  | Preparation & Submittals of SD of Room Management System at B3 | 30d | 2014-11-24 | 2014-12-29 | PQ-CS-C-492 | 104d | 0d | Shop Drawings Submittals [60 h] |
| SD-CS-B3-652 |  | Review & Approval of SD of Room Management System at B3 | 30d | 2014-12-06 | 2015-01-10 | SD-CS-B3-642 SS+10d, SD-CS-B3-642 FF+10d | 405d | 281d | Shop Drawings Approval [40 h] |
|  | 1 | **Basement 2 Floor level - Shop drawings** |  | 2014-12-01 | 2015-01-17 |  |  |  |  |
| SD-CS-B3-622 |  | Preparation & Submittals of SD of Room Management System at B2 | 30d | 2014-12-01 | 2015-01-05 | SD-CS-B3-642 SS+6d | 104d | 0d | Shop Drawings Submittals [60 h] |
| SD-CS-B3-632 |  | Review & Approval of SD of Room Management System at B2 | 30d | 2014-12-13 | 2015-01-17 | SD-CS-B3-622 SS+10d, SD-CS-B3-622 FF+10d | 331d | 295d | Shop Drawings Approval [40 h] |
|  | 2 | **Basement 1 Floor level - Shop drawings** |  | 2014-12-08 | 2015-01-24 |  |  |  |  |
| SD-CS-B2-402 |  | Preparation & Submittals of SD of Room Management System at B1 | 30d | 2014-12-08 | 2015-01-12 | SD-CS-B3-622 SS+6d | 104d | 0d | Shop Drawings Submittals [60 h] |
| SD-CS-B2-412 |  | Review & Approval of SD of Room Management System at B1 | 30d | 2014-12-21 | 2015-01-24 | SD-CS-B2-402 SS+10d, SD-CS-B2-402 FF+10d | 350d | 309d | Shop Drawings Approval [40 h] |
|  | 3 | **Ground Floor level - Shop drawings** |  | 2014-12-15 | 2015-01-31 |  |  |  |  |
| SD-CS-B1-402 |  | Preparation & Submittals of SD of Room Management System at GF | 30d | 2014-12-15 | 2015-01-19 | SD-CS-B2-402 SS+6d, G-CD-003 | 104d | 0d | Shop Drawings Submittals [60 h] |
| SD-CS-B1-412 |  | Review & Approval of SD of Room Management System at GF | 30d | 2014-12-28 | 2015-01-31 | SD-CS-B1-402 SS+10d, SD-CS-B1-402 FF+10d | 155d | 45d | Shop Drawings Approval [40 h] |
|  | 4 | **Mezzanine Floor level - Shop drawings** |  | 2014-12-23 | 2015-02-07 |  |  |  |  |
| SD-CS-GF-402 |  | Preparation & Submittals of SD of Room Management System at ML | 30d | 2014-12-23 | 2015-01-26 | SD-CS-B1-402 SS+6d | 104d | 0d | Shop Drawings Submittals [60 h] |
| SD-CS-GF-412 |  | Review & Approval of SD of Room Management System at ML | 30d | 2015-01-04 | 2015-02-07 | SD-CS-GF-402 SS+10d, SD-CS-GF-402 FF+10d | 169d | 59d | Shop Drawings Approval [40 h] |

| ID | WBS | Activity | Duration | Start | Finish | Predecessors | Total float | Free float | Resources |
| --- | --- | --- | --- | --- | --- | --- | --- | --- | --- |
|  | 5 | **Level 1 Floor - Shop drawings** |  | 2014-12-30 | 2015-02-15 |  |  |  |  |
| SD-CS-L1-422 |  | Preparation & Submittals of SD of Room Management System at L1 | 30d | 2014-12-30 | 2015-02-02 | SD-CS-GF-402 SS+6d | 183d | 0d | Shop Drawings Submittals [60 h] |
| SD-CS-L1-432 |  | Review & Approval of SD of Room Management System at L1 | 30d | 2015-01-11 | 2015-02-15 | SD-CS-L1-422 SS+10d, SD-CS-L1-422 FF+10d | 183d | 73d | Shop Drawings Approval [40 h] |
|  | 6 | **Level 2 Floor - Shop drawings** |  | 2014-12-30 | 2015-02-15 |  |  |  |  |
| SD-CS-L2-442 |  | Preparation & Submittals of SD of Room Management System at L2 | 30d | 2014-12-30 | 2015-02-02 | SD-CS-GF-402 SS+6d | 104d | 0d | Shop Drawings Submittals [60 h] |
| SD-CS-L2-452 |  | Review & Approval of SD of Room Management System at L2 | 30d | 2015-01-11 | 2015-02-15 | SD-CS-L2-442 SS+10d, SD-CS-L2-442 FF+10d | 223d | 113d | Shop Drawings Approval [40 h] |
|  | 7 | **Level 3 Floor - Shop drawings** |  | 2015-01-06 | 2015-02-22 |  |  |  |  |
| SD-CS-L3-462 |  | Preparation & Submittals of SD of Room Management System at L3 | 30d | 2015-01-06 | 2015-02-09 | SD-CS-L2-442 SS+6d | 104d | 0d | Shop Drawings Submittals [60 h] |
| SD-CS-L3-472 |  | Review & Approval of SD of Room Management System at L3 | 30d | 2015-01-18 | 2015-02-22 | SD-CS-L3-462 SS+10d, SD-CS-L3-462 FF+10d | 237d | 127d | Shop Drawings Approval [40 h] |
|  | 8 | **Level 4 Floor - Shop drawings** |  | 2015-01-13 | 2015-03-01 |  |  |  |  |
| SD-CS-L4-1482 |  | Preparation & Submittals of SD of Room Management System at L4 | 30d | 2015-01-13 | 2015-02-17 | SD-CS-L3-462 SS+6d | 104d | 0d | Shop Drawings Submittals [60 h] |
| SD-CS-L4-1492 |  | Review & Approval of SD of Room Management System at L4 | 30d | 2015-01-25 | 2015-03-01 | SD-CS-L4-1482 SS+10d, SD-CS-L4-1482 FF+10d | 231d | 121d | Shop Drawings Approval [40 h] |
|  | 9 | **Level 5 Floor - Shop drawings** |  | 2015-01-20 | 2015-03-08 |  |  |  |  |
| SD-CS-L5-502 |  | Preparation & Submittals of SD of Room Management System at L5 | 30d | 2015-01-20 | 2015-02-24 | SD-CS-L4-1482 SS+6d | 104d | 0d | Shop Drawings Submittals [60 h] |
| SD-CS-L5-512 |  | Review & Approval of SD of Room Management System at L5 | 30d | 2015-02-01 | 2015-03-08 | SD-CS-L5-502 SS+10d, SD-CS-L5-502 FF+10d | 233d | 115d | Shop Drawings Approval [40 h] |
|  | 10 | **Level 6 Floor - Shop drawings** |  | 2015-01-27 | 2015-03-15 |  |  |  |  |
| SD-CS-L6-522 |  | Preparation & Submittals of SD of Room Management System at L6 | 30d | 2015-01-27 | 2015-03-03 | SD-CS-L5-502 SS+6d | 104d | 0d | Shop Drawings Submittals [60 h] |
| SD-CS-L6-532 |  | Review & Approval of SD of Room Management System at L6 | 30d | 2015-02-08 | 2015-03-15 | SD-CS-L6-522 SS+10d, SD-CS-L6-522 FF+10d | 247d | 129d | Shop Drawings Approval [40 h] |
|  | 11 | **Level 7 Floor - Shop drawings** |  | 2015-02-03 | 2015-03-22 |  |  |  |  |
| SD-CS-L7-542 |  | Preparation & Submittals of SD of Room Management System at L7 | 30d | 2015-02-03 | 2015-03-10 | SD-CS-L6-522 SS+6d | 104d | 0d | Shop Drawings Submittals [60 h] |
| SD-CS-L7-552 |  | Review & Approval of SD of Room Management System at L7 | 30d | 2015-02-16 | 2015-03-22 | SD-CS-L7-542 SS+10d, SD-CS-L7-542 FF+10d | 242d | 123d | Shop Drawings Approval [40 h] |
|  | 12 | **Level 8 Floor - Shop drawings** |  | 2015-02-11 | 2015-03-29 |  |  |  |  |
| SD-CS-L8-562 |  | Preparation & Submittals of SD of Room Management System at L8 | 30d | 2015-02-11 | 2015-03-17 | SD-CS-L7-542 SS+6d | 104d | 0d | Shop Drawings Submittals [60 h] |
| SD-CS-L8-572 |  | Review & Approval of SD of Room Management System at L8 | 30d | 2015-02-23 | 2015-03-29 | SD-CS-L8-562 SS+10d, SD-CS-L8-562 FF+10d | 240d | 117d | Shop Drawings Approval [40 h] |

| ID | WBS | Activity | Duration | Start | Finish | Predecessors | Total float | Free float | Resources |
| --- | --- | --- | --- | --- | --- | --- | --- | --- | --- |
|  | 13 | **Level 9 Floor - Shop drawings** |  | 2015-02-18 | 2015-04-05 |  |  |  |  |
| SD-CS-L9-582 |  | Preparation & Submittals of SD of Room Management System at L9 | 30d | 2015-02-18 | 2015-03-24 | SD-CS-L8-562 SS+6d | 104d | 0d | Shop Drawings Submittals [60 h] |
| SD-CS-L9-592 |  | Review & Approval of SD of Room Management System at L9 | 30d | 2015-03-02 | 2015-04-05 | SD-CS-L9-582 SS+10d, SD-CS-L9-582 FF+10d | 234d | 111d | Shop Drawings Approval [40 h] |
|  | 14 | **Level 10 Floor - Shop drawings** |  | 2015-02-25 | 2015-04-12 |  |  |  |  |
| SD-CS-L10-602 |  | Preparation & Submittals of SD of Room Management System at L10 | 30d | 2015-02-25 | 2015-03-31 | SD-CS-L9-582 SS+6d | 104d | 0d | Shop Drawings Submittals [60 h] |
| SD-CS-L10-612 |  | Review & Approval of SD of Room Management System at L10 | 30d | 2015-03-09 | 2015-04-12 | SD-CS-L10-602 SS+10d, SD-CS-L10-602 FF+10d | 228d | 105d | Shop Drawings Approval [40 h] |
|  | 15 | **Level 11 Floor - Shop drawings** |  | 2015-03-04 | 2015-04-19 |  |  |  |  |
| SD-CS-L11-622 |  | Preparation & Submittals of SD of Room Management System at L11 | 30d | 2015-03-04 | 2015-04-07 | SD-CS-L10-602 SS+6d | 104d | 0d | Shop Drawings Submittals [60 h] |
| SD-CS-L11-632 |  | Review & Approval of SD of Room Management System at L11 | 30d | 2015-03-16 | 2015-04-19 | SD-CS-L11-622 SS+10d, SD-CS-L11-622 FF+10d | 222d | 99d | Shop Drawings Approval [40 h] |
|  | 16 | **Level 12 Floor - Shop drawings** |  | 2015-03-11 | 2015-04-26 |  |  |  |  |
| SD-CS-L12-642 |  | Preparation & Submittals of SD of Room Management System at L12 | 30d | 2015-03-11 | 2015-04-14 | SD-CS-L11-622 SS+6d | 104d | 0d | Shop Drawings Submittals [60 h] |
| SD-CS-L12-652 |  | Review & Approval of SD of Room Management System at L12 | 30d | 2015-03-23 | 2015-04-26 | SD-CS-L12-642 SS+10d, SD-CS-L12-642 FF+10d | 216d | 93d | Shop Drawings Approval [40 h] |
|  | 17 | **Level 13 Floor - Shop drawings** |  | 2015-03-18 | 2015-05-03 |  |  |  |  |
| SD-CS-L13-662 |  | Preparation & Submittals of SD of Room Management System at L13 | 30d | 2015-03-18 | 2015-04-21 | SD-CS-L12-642 SS+6d | 104d | 0d | Shop Drawings Submittals [60 h] |
| SD-CS-L13-672 |  | Review & Approval of SD of Room Management System at L13 | 30d | 2015-03-30 | 2015-05-03 | SD-CS-L13-662 SS+10d, SD-CS-L13-662 FF+10d | 230d | 107d | Shop Drawings Approval [40 h] |
|  | 18 | **Level 14 Floor - Shop drawings** |  | 2015-03-25 | 2015-05-10 |  |  |  |  |
| SD-CS-L14-682 |  | Preparation & Submittals of SD of Room Management System at L14 | 30d | 2015-03-25 | 2015-04-28 | SD-CS-L13-662 SS+6d | 104d | 0d | Shop Drawings Submittals [60 h] |
| SD-CS-L14-692 |  | Review & Approval of SD of Room Management System at L14 | 30d | 2015-04-06 | 2015-05-10 | SD-CS-L14-682 SS+10d, SD-CS-L14-682 FF+10d | 226d | 101d | Shop Drawings Approval [40 h] |
|  | 19 | **Level 15 Floor - Shop drawings** |  | 2015-04-01 | 2015-05-17 |  |  |  |  |
| SD-CS-L15-702 |  | Preparation & Submittals of SD of Room Management System at L15 | 30d | 2015-04-01 | 2015-05-05 | SD-CS-L14-682 SS+6d | 104d | 0d | Shop Drawings Submittals [60 h] |
| SD-CS-L15-712 |  | Review & Approval of SD of Room Management System at L15 | 30d | 2015-04-13 | 2015-05-17 | SD-CS-L15-702 SS+10d, SD-CS-L15-702 FF+10d | 220d | 95d | Shop Drawings Approval [40 h] |
|  | 20 | **Level 16 Floor - Shop drawings** |  | 2015-04-08 | 2015-05-24 |  |  |  |  |
| SD-CS-L16-722 |  | Preparation & Submittals of SD of Room Management System at L16 | 30d | 2015-04-08 | 2015-05-12 | SD-CS-L15-702 SS+6d | 104d | 0d | Shop Drawings Submittals [60 h] |
| SD-CS-L16-732 |  | Review & Approval of SD of Room Management System at L16 | 30d | 2015-04-20 | 2015-05-24 | SD-CS-L16-722 SS+10d, SD-CS-L16-722 FF+10d | 214d | 89d | Shop Drawings Approval [40 h] |

| ID | WBS | Activity | Duration | Start | Finish | Predecessors | Total float | Free float | Resources |
| --- | --- | --- | --- | --- | --- | --- | --- | --- | --- |
|  | 21 | **Level 17 Floor - Shop drawings** |  | 2015-04-15 | 2015-05-31 |  |  |  |  |
| SD-CS-L17-1502 |  | Preparation & Submittals of SD of Room Management System at L17 | 30d | 2015-04-15 | 2015-05-19 | SD-CS-L16-722 SS+6d | 104d | 0d | Shop Drawings Submittals [60 h] |
| SD-CS-L17-1512 |  | Review & Approval of SD of Room Management System at L17 | 30d | 2015-04-27 | 2015-05-31 | SD-CS-L17-1502 SS+10d, SD-CS-L17-1502 FF+10d | 208d | 83d | Shop Drawings Approval [40 h] |
|  | 22 | **Level 18 Floor - Shop drawings** |  | 2015-04-22 | 2015-06-07 |  |  |  |  |
| SD-CS-L18-762 |  | Preparation & Submittals of SD of Room Management System at L18 | 30d | 2015-04-22 | 2015-05-26 | SD-CS-L17-1502 SS+6d | 104d | 0d | Shop Drawings Submittals [60 h] |
| SD-CS-L18-772 |  | Review & Approval of SD of Room Management System at L18 | 30d | 2015-05-04 | 2015-06-07 | SD-CS-L18-762 SS+10d, SD-CS-L18-762 FF+10d | 202d | 79d | Shop Drawings Approval [40 h] |
|  | 23 | **Level 19 Floor - Shop drawings** |  | 2015-04-29 | 2015-06-14 |  |  |  |  |
| SD-CS-L19-782 |  | Preparation & Submittals of SD of Room Management System at L19 | 30d | 2015-04-29 | 2015-06-02 | SD-CS-L18-762 SS+6d | 104d | 0d | Shop Drawings Submittals [60 h] |
| SD-CS-L19-792 |  | Review & Approval of SD of Room Management System at L19 | 30d | 2015-05-11 | 2015-06-14 | SD-CS-L19-782 SS+10d, SD-CS-L19-782 FF+10d | 196d | 80d | Shop Drawings Approval [40 h] |
|  | 24 | **Level 20 Floor - Shop drawings** |  | 2015-05-06 | 2015-06-21 |  |  |  |  |
| SD-CS-L20-802 |  | Preparation & Submittals of SD of Room Management System at L20 | 30d | 2015-05-06 | 2015-06-09 | SD-CS-L19-782 SS+6d | 104d | 0d | Shop Drawings Submittals [60 h] |
| SD-CS-L20-812 |  | Review & Approval of SD of Room Management System at L20 | 30d | 2015-05-18 | 2015-06-21 | SD-CS-L20-802 SS+10d, SD-CS-L20-802 FF+10d | 190d | 81d | Shop Drawings Approval [40 h] |
|  | 25 | **Level 21 Floor - Shop drawings** |  | 2015-05-13 | 2015-06-28 |  |  |  |  |
| SD-CS-L21-822 |  | Preparation & Submittals of SD of Room Management System at L21 | 30d | 2015-05-13 | 2015-06-16 | SD-CS-L20-802 SS+6d | 104d | 0d | Shop Drawings Submittals [60 h] |
| SD-CS-L21-832 |  | Review & Approval of SD of Room Management System at L21 | 30d | 2015-05-25 | 2015-06-28 | SD-CS-L21-822 SS+10d, SD-CS-L21-822 FF+10d | 184d | 89d | Shop Drawings Approval [40 h] |
|  | 26 | **Level 22 Floor - Shop drawings** |  | 2015-05-20 | 2015-07-05 |  |  |  |  |
| SD-CS-L22-842 |  | Preparation & Submittals of SD of Room Management System at L22 | 30d | 2015-05-20 | 2015-06-23 | SD-CS-L21-822 SS+6d | 104d | 0d | Shop Drawings Submittals [60 h] |
| SD-CS-L22-852 |  | Review & Approval of SD of Room Management System at L22 | 30d | 2015-06-01 | 2015-07-05 | SD-CS-L22-842 SS+10d, SD-CS-L22-842 FF+10d | 178d | 83d | Shop Drawings Approval [40 h] |
|  | 27 | **Level 23 Floor - Shop drawings** |  | 2015-05-27 | 2015-07-12 |  |  |  |  |
| SD-CS-L23-862 |  | Preparation & Submittals of SD of Room Management System at L23 | 30d | 2015-05-27 | 2015-06-30 | SD-CS-L22-842 SS+6d | 104d | 0d | Shop Drawings Submittals [60 h] |
| SD-CS-L23-872 |  | Review & Approval of SD of Room Management System at L23 | 30d | 2015-06-08 | 2015-07-12 | SD-CS-L23-862 SS+10d, SD-CS-L23-862 FF+10d | 172d | 91d | Shop Drawings Approval [40 h] |
|  | 28 | **Level 24 Floor - Shop drawings** |  | 2015-06-03 | 2015-07-21 |  |  |  |  |
| SD-CS-L24-882 |  | Preparation & Submittals of SD of Room Management System at L24 | 30d | 2015-06-03 | 2015-07-07 | SD-CS-L23-862 SS+6d | 104d | 0d | Shop Drawings Submittals [60 h] |
| SD-CS-L24-892 |  | Review & Approval of SD of Room Management System at L24 | 30d | 2015-06-15 | 2015-07-21 | SD-CS-L24-882 SS+10d, SD-CS-L24-882 FF+10d | 186d | 105d | Shop Drawings Approval [40 h] |

| ID | WBS | Activity | Duration | Start | Finish | Predecessors | Total float | Free float | Resources |
| --- | --- | --- | --- | --- | --- | --- | --- | --- | --- |
|  | 29 | **Level 25 Floor - Shop drawings** |  | 2015-06-10 | 2015-07-28 |  |  |  |  |
| SD-CS-L25-902 |  | Preparation & Submittals of SD of Room Management System at L25 | 30d | 2015-06-10 | 2015-07-14 | SD-CS-L24-882 SS+6d | 104d | 0d | Shop Drawings Submittals [60 h] |
| SD-CS-L25-912 |  | Review & Approval of SD of Room Management System at L25 | 30d | 2015-06-22 | 2015-07-28 | SD-CS-L25-902 SS+10d, SD-CS-L25-902 FF+10d | 180d | 99d | Shop Drawings Approval [40 h] |
|  | 30 | **Level 26 Floor - Shop drawings** |  | 2015-06-17 | 2015-08-04 |  |  |  |  |
| SD-CS-L26-922 |  | Preparation & Submittals of SD of Room Management System at L26 | 30d | 2015-06-17 | 2015-07-23 | SD-CS-L25-902 SS+6d | 104d | 0d | Shop Drawings Submittals [60 h] |
| SD-CS-L26-932 |  | Review & Approval of SD of Room Management System at L26 | 30d | 2015-06-29 | 2015-08-04 | SD-CS-L26-922 SS+10d, SD-CS-L26-922 FF+10d | 174d | 93d | Shop Drawings Approval [40 h] |
|  | 31 | **Level 27 Floor - Shop drawings** |  | 2015-06-24 | 2015-08-11 |  |  |  |  |
| SD-CS-L27-942 |  | Preparation & Submittals of SD of Room Management System at L27 | 30d | 2015-06-24 | 2015-07-30 | SD-CS-L26-922 SS+6d | 104d | 0d | Shop Drawings Submittals [60 h] |
| SD-CS-L27-952 |  | Review & Approval of SD of Room Management System at L27 | 30d | 2015-07-06 | 2015-08-11 | SD-CS-L27-942 SS+10d, SD-CS-L27-942 FF+10d | 168d | 87d | Shop Drawings Approval [40 h] |
|  | 32 | **Level 28 Floor - Shop drawings** |  | 2015-07-01 | 2015-08-18 |  |  |  |  |
| SD-CS-L28-962 |  | Preparation & Submittals of SD of Room Management System at L28 | 30d | 2015-07-01 | 2015-08-06 | SD-CS-L27-942 SS+6d | 104d | 0d | Shop Drawings Submittals [60 h] |
| SD-CS-L28-972 |  | Review & Approval of SD of Room Management System at L28 | 30d | 2015-07-13 | 2015-08-18 | SD-CS-L28-962 SS+10d, SD-CS-L28-962 FF+10d | 162d | 90d | Shop Drawings Approval [40 h] |
|  | 33 | **Level 29 Floor - Shop drawings** |  | 2015-07-08 | 2015-08-25 |  |  |  |  |
| SD-CS-L29-982 |  | Preparation & Submittals of SD of Room Management System at L29 | 30d | 2015-07-08 | 2015-08-13 | SD-CS-L28-962 SS+6d | 104d | 0d | Shop Drawings Submittals [60 h] |
| SD-CS-L29-992 |  | Review & Approval of SD of Room Management System at L29 | 30d | 2015-07-22 | 2015-08-25 | SD-CS-L29-982 SS+10d, SD-CS-L29-982 FF+10d | 156d | 84d | Shop Drawings Approval [40 h] |
|  | 34 | **Level 30 Floor - Shop drawings** |  | 2015-07-18 | 2015-09-01 |  |  |  |  |
| SD-CS-L30-1002 |  | Preparation & Submittals of SD of Room Management System at L30 | 30d | 2015-07-18 | 2015-08-20 | SD-CS-L29-982 SS+6d | 104d | 0d | Shop Drawings Submittals [60 h] |
| SD-CS-L30-1012 |  | Review & Approval of SD of Room Management System at L30 | 30d | 2015-07-29 | 2015-09-01 | SD-CS-L30-1002 SS+10d, SD-CS-L30-1002 FF+10d | 150d | 82d | Shop Drawings Approval [40 h] |
|  | 35 | **Level 31 Floor - Shop drawings** |  | 2015-07-25 | 2015-09-08 |  |  |  |  |
| SD-CS-L31-1022 |  | Preparation & Submittals of SD of Room Management System at L31 | 30d | 2015-07-25 | 2015-08-27 | SD-CS-L30-1002 SS+6d | 104d | 0d | Shop Drawings Submittals [60 h] |
| SD-CS-L31-1032 |  | Review & Approval of SD of Room Management System at L31 | 30d | 2015-08-05 | 2015-09-08 | SD-CS-L31-1022 SS+10d, SD-CS-L31-1022 FF+10d | 144d | 90d | Shop Drawings Approval [40 h] |
|  | 36 | **Level 32 Floor - Shop drawings** |  | 2015-08-01 | 2015-09-15 |  |  |  |  |
| SD-CS-L32-1042 |  | Preparation & Submittals of SD of Room Management System at L32 | 30d | 2015-08-01 | 2015-09-03 | SD-CS-L31-1022 SS+6d | 104d | 0d | Shop Drawings Submittals [60 h] |
| SD-CS-L32-1052 |  | Review & Approval of SD of Room Management System at L32 | 30d | 2015-08-12 | 2015-09-15 | SD-CS-L32-1042 SS+10d, SD-CS-L32-1042 FF+10d | 158d | 104d | Shop Drawings Approval [40 h] |

| ID | WBS | Activity | Duration | Start | Finish | Predecessors | Total float | Free float | Resources |
| --- | --- | --- | --- | --- | --- | --- | --- | --- | --- |
|  | 37 | **Level 33 Floor - Shop drawings** |  | 2015-08-08 | 2015-09-26 |  |  |  |  |
| SD-CS-L33-1062 |  | Preparation & Submittals of SD of Room Management System at L33 | 30d | 2015-08-08 | 2015-09-10 | SD-CS-L32-1042 SS+6d | 104d | 0d | Shop Drawings Submittals [60 h] |
| SD-CS-L33-1072 |  | Review & Approval of SD of Room Management System at L33 | 30d | 2015-08-19 | 2015-09-26 | SD-CS-L33-1062 SS+10d, SD-CS-L33-1062 FF+10d | 152d | 98d | Shop Drawings Approval [40 h] |
|  | 38 | **Level 34 Floor - Shop drawings** |  | 2015-08-15 | 2015-10-03 |  |  |  |  |
| SD-CS-L34-1082 |  | Preparation & Submittals of SD of Room Management System at L34 | 30d | 2015-08-15 | 2015-09-17 | SD-CS-L33-1062 SS+6d | 104d | 0d | Shop Drawings Submittals [60 h] |
| SD-CS-L34-1092 |  | Review & Approval of SD of Room Management System at L34 | 30d | 2015-08-26 | 2015-10-03 | SD-CS-L34-1082 SS+10d, SD-CS-L34-1082 FF+10d | 161d | 92d | Shop Drawings Approval [40 h] |
|  | 39 | **Level 35 Floor - Shop drawings** |  | 2015-08-22 | 2015-10-10 |  |  |  |  |
| SD-CS-L35-1102 |  | Preparation & Submittals of SD of Room Management System at L35 | 30d | 2015-08-22 | 2015-09-28 | SD-CS-L34-1082 SS+6d | 104d | 0d | Shop Drawings Submittals [60 h] |
| SD-CS-L35-1112 |  | Review & Approval of SD of Room Management System at L35 | 30d | 2015-09-02 | 2015-10-10 | SD-CS-L35-1102 SS+10d, SD-CS-L35-1102 FF+10d | 155d | 93d | Shop Drawings Approval [40 h] |
|  | 40 | **Level 36 Floor - Shop drawings** |  | 2015-08-29 | 2015-10-17 |  |  |  |  |
| SD-CS-L36-1122 |  | Preparation & Submittals of SD of Room Management System at L36 | 30d | 2015-08-29 | 2015-10-05 | SD-CS-L35-1102 SS+6d | 104d | 0d | Shop Drawings Submittals [60 h] |
| SD-CS-L36-1132 |  | Review & Approval of SD of Room Management System at L36 | 30d | 2015-09-09 | 2015-10-17 | SD-CS-L36-1122 SS+10d, SD-CS-L36-1122 FF+10d | 149d | 87d | Shop Drawings Approval [40 h] |
|  | 41 | **Level 37 Floor - Shop drawings** |  | 2015-09-05 | 2015-10-24 |  |  |  |  |
| SD-CS-L37-1142 |  | Preparation & Submittals of SD of Room Management System at L37 | 30d | 2015-09-05 | 2015-10-12 | SD-CS-L36-1122 SS+6d | 104d | 0d | Shop Drawings Submittals [60 h] |
| SD-CS-L37-1152 |  | Review & Approval of SD of Room Management System at L37 | 30d | 2015-09-16 | 2015-10-24 | SD-CS-L37-1142 SS+10d, SD-CS-L37-1142 FF+10d | 153d | 85d | Shop Drawings Approval [40 h] |
|  | 42 | **Level 38 Floor - Shop drawings** |  | 2015-09-12 | 2015-10-31 |  |  |  |  |
| SD-CS-L38-1162 |  | Preparation & Submittals of SD of Room Management System at L38 | 30d | 2015-09-12 | 2015-10-19 | SD-CS-L37-1142 SS+6d | 104d | 0d | Shop Drawings Submittals [60 h] |
| SD-CS-L38-1172 |  | Review & Approval of SD of Room Management System at L38 | 30d | 2015-09-27 | 2015-10-31 | SD-CS-L38-1162 SS+10d, SD-CS-L38-1162 FF+10d | 156d | 85d | Shop Drawings Approval [40 h] |
|  | 43 | **Level 39 Floor - Shop drawings** |  | 2015-09-19 | 2015-11-07 |  |  |  |  |
| SD-CS-L39-1182 |  | Preparation & Submittals of SD of Room Management System at L39 | 30d | 2015-09-19 | 2015-10-26 | SD-CS-L38-1162 SS+6d | 104d | 0d | Shop Drawings Submittals [60 h] |
| SD-CS-L39-1192 |  | Review & Approval of SD of Room Management System at L39 | 30d | 2015-10-04 | 2015-11-07 | SD-CS-L39-1182 SS+10d, SD-CS-L39-1182 FF+10d | 151d | 93d | Shop Drawings Approval [40 h] |
|  | 44 | **Level 40 Floor - Shop drawings** |  | 2015-09-29 | 2015-11-14 |  |  |  |  |
| SD-CS-L40-1202 |  | Preparation & Submittals of SD of Room Management System at L40 | 30d | 2015-09-29 | 2015-11-02 | SD-CS-L39-1182 SS+6d | 104d | 0d | Shop Drawings Submittals [60 h] |
| SD-CS-L40-1212 |  | Review & Approval of SD of Room Management System at L40 | 30d | 2015-10-11 | 2015-11-14 | SD-CS-L40-1202 SS+10d, SD-CS-L40-1202 FF+10d | 145d | 87d | Shop Drawings Approval [40 h] |

| ID | WBS | Activity | Duration | Start | Finish | Predecessors | Total float | Free float | Resources |
| --- | --- | --- | --- | --- | --- | --- | --- | --- | --- |
|  | 45 | **Level 41 Floor - Shop drawings** |  | 2015-10-06 | 2015-11-21 |  |  |  |  |
| SD-CS-L41-1222 |  | Preparation & Submittals of SD of Room Management System at L41 | 30d | 2015-10-06 | 2015-11-09 | SD-CS-L40-1202 SS+6d | 104d | 0d | Shop Drawings Submittals [60 h] |
| SD-CS-L41-1232 |  | Review & Approval of SD of Room Management System at L41 | 30d | 2015-10-18 | 2015-11-21 | SD-CS-L41-1222 SS+10d, SD-CS-L41-1222 FF+10d | 139d | 85d | Shop Drawings Approval [40 h] |
|  | 46 | **Level 42 Floor - Shop drawings** |  | 2015-10-13 | 2015-11-28 |  |  |  |  |
| SD-CS-L42-1242 |  | Preparation & Submittals of SD of Room Management System at L42 | 30d | 2015-10-13 | 2015-11-16 | SD-CS-L41-1222 SS+6d | 104d | 0d | Shop Drawings Submittals [60 h] |
| SD-CS-L42-1252 |  | Review & Approval of SD of Room Management System at L42 | 30d | 2015-10-25 | 2015-11-28 | SD-CS-L42-1242 SS+10d, SD-CS-L42-1242 FF+10d | 133d | 93d | Shop Drawings Approval [40 h] |
|  | 47 | **Level 43 Floor - Shop drawings** |  | 2015-10-20 | 2015-12-05 |  |  |  |  |
| SD-CS-L43-1262 |  | Preparation & Submittals of SD of Room Management System at L43 | 30d | 2015-10-20 | 2015-11-23 | SD-CS-L42-1242 SS+6d | 104d | 0d | Shop Drawings Submittals [60 h] |
| SD-CS-L43-1272 |  | Review & Approval of SD of Room Management System at L43 | 30d | 2015-11-01 | 2015-12-05 | SD-CS-L43-1262 SS+10d, SD-CS-L43-1262 FF+10d | 127d | 87d | Shop Drawings Approval [40 h] |
|  | 48 | **Level 44 Floor - Shop drawings** |  | 2015-10-27 | 2015-12-12 |  |  |  |  |
| SD-CS-L44-1282 |  | Preparation & Submittals of SD of Room Management System at L44 | 30d | 2015-10-27 | 2015-11-30 | SD-CS-L43-1262 SS+6d | 104d | 0d | Shop Drawings Submittals [60 h] |
| SD-CS-L44-1292 |  | Review & Approval of SD of Room Management System at L44 | 30d | 2015-11-08 | 2015-12-12 | SD-CS-L44-1282 SS+10d, SD-CS-L44-1282 FF+10d | 140d | 85d | Shop Drawings Approval [40 h] |
|  | 49 | **Level 45 Floor - Shop drawings** |  | 2015-11-03 | 2015-12-20 |  |  |  |  |
| SD-CS-L45-1302 |  | Preparation & Submittals of SD of Room Management System at L45 | 30d | 2015-11-03 | 2015-12-07 | SD-CS-L44-1282 SS+6d | 104d | 0d | Shop Drawings Submittals [60 h] |
| SD-CS-L45-1312 |  | Review & Approval of SD of Room Management System at L45 | 30d | 2015-11-15 | 2015-12-20 | SD-CS-L45-1302 SS+10d, SD-CS-L45-1302 FF+10d | 134d | 92d | Shop Drawings Approval [40 h] |
|  | 50 | **Level 46 Floor - Shop drawings** |  | 2015-11-10 | 2015-12-27 |  |  |  |  |
| SD-CS-L46-1322 |  | Preparation & Submittals of SD of Room Management System at L46 | 30d | 2015-11-10 | 2015-12-14 | SD-CS-L45-1302 SS+6d | 104d | 0d | Shop Drawings Submittals [60 h] |
| SD-CS-L46-1332 |  | Review & Approval of SD of Room Management System at L46 | 30d | 2015-11-22 | 2015-12-27 | SD-CS-L46-1322 SS+10d, SD-CS-L46-1322 FF+10d | 128d | 87d | Shop Drawings Approval [40 h] |
|  | 53 | **Level 47 Floor - Shop drawings** |  | 2015-11-17 | 2016-01-03 |  |  |  |  |
| SD-CS-L47-1342 |  | Preparation & Submittals of SD of Room Management System at L47 | 30d | 2015-11-17 | 2015-12-22 | SD-CS-L46-1322 SS+6d | 104d | 0d | Shop Drawings Submittals [60 h] |
| SD-CS-L47-1352 |  | Review & Approval of SD of Room Management System at L47 | 30d | 2015-11-29 | 2016-01-03 | SD-CS-L47-1342 SS+10d, SD-CS-L47-1342 FF+10d | 122d | 85d | Shop Drawings Approval [40 h] |
|  | 51 | **Level 48 Floor - Shop drawings** |  | 2015-11-24 | 2016-01-10 |  |  |  |  |
| SD-CS-L48-1362 |  | Preparation & Submittals of SD of Room Management System at L48 | 30d | 2015-11-24 | 2015-12-29 | SD-CS-L47-1342 SS+6d | 104d | 0d | Shop Drawings Submittals [60 h] |
| SD-CS-L48-1372 |  | Review & Approval of SD of Room Management System at L48 | 30d | 2015-12-06 | 2016-01-10 | SD-CS-L48-1362 SS+10d, SD-CS-L48-1362 FF+10d | 116d | 80d | Shop Drawings Approval [40 h] |

| ID | WBS | Activity | Duration | Start | Finish | Predecessors | Total float | Free float | Resources |
| --- | --- | --- | --- | --- | --- | --- | --- | --- | --- |
|  | 52 | **Level 49 Floor - Shop drawings** |  | 2015-12-01 | 2016-01-17 |  |  |  |  |
| SD-CS-L49-1382 |  | Preparation & Submittals of SD of Room Management System at L49 | 30d | 2015-12-01 | 2016-01-05 | SD-CS-L48-1362 SS+6d | 104d | 0d | Shop Drawings Submittals [60 h] |
| SD-CS-L49-1392 |  | Review & Approval of SD of Room Management System at L49 | 30d | 2015-12-13 | 2016-01-17 | SD-CS-L49-1382 SS+10d, SD-CS-L49-1382 FF+10d | 110d | 86d | Shop Drawings Approval [40 h] |
|  | 54 | **Level 50 Floor - Shop drawings** |  | 2015-12-08 | 2016-01-24 |  |  |  |  |
| SD-CS-L50-1402 |  | Preparation & Submittals of SD of Room Management System at L50 | 30d | 2015-12-08 | 2016-01-12 | SD-CS-L49-1382 SS+6d | 104d | 0d | Shop Drawings Submittals [60 h] |
| SD-CS-L50-1412 |  | Review & Approval of SD of Room Management System at L50 | 30d | 2015-12-21 | 2016-01-24 | SD-CS-L50-1402 SS+10d, SD-CS-L50-1402 FF+10d | 104d | 86d | Shop Drawings Approval [40 h] |
|  | 55 | **Level 51 Floor - Shop drawings** |  | 2015-12-15 | 2016-01-31 |  |  |  |  |
| SD-CS-L51-2162 |  | Preparation & Submittals of SD of Room Management System at L51 | 30d | 2015-12-15 | 2016-01-19 | SD-CS-L50-1402 SS+6d | 118d | 0d | Shop Drawings Submittals [60 h] |
| SD-CS-L51-2172 |  | Review & Approval of SD of Room Management System at L51 | 30d | 2015-12-28 | 2016-01-31 | SD-CS-L51-2162 SS+10d, SD-CS-L51-2162 FF+10d | 118d | 100d | Shop Drawings Approval [40 h] |
|  | 12 | **Fire Alarm & Detection System** |  | 2014-11-24 | 2016-01-31 |  |  |  |  |
|  | R | **Basement 3 Floor level - Shop drawings** |  | 2014-11-24 | 2015-01-10 |  |  |  |  |
| SD-CS-B3-722 |  | Preparation & Submittals of SD of Fire Alarm & Detection System at B3 | 30d | 2014-11-24 | 2014-12-29 | PQ-CS-C-492 | 117d | 0d | Shop Drawings Submittals [60 h] |
| SD-CS-B3-732 |  | Review & Approval of SD of Fire Alarm & Detection System at B3 | 30d | 2014-12-06 | 2015-01-10 | SD-CS-B3-722 SS+10d, SD-CS-B3-722 FF+10d | 410d | 281d | Shop Drawings Approval [40 h] |
|  | 1 | **Basement 2 Floor level - Shop drawings** |  | 2014-12-01 | 2015-01-17 |  |  |  |  |
| SD-CS-B3-702 |  | Preparation & Submittals of SD of Fire Alarm & Detection System at B2 | 30d | 2014-12-01 | 2015-01-05 | SD-CS-B3-722 SS+6d | 117d | 0d | Shop Drawings Submittals [60 h] |
| SD-CS-B3-712 |  | Review & Approval of SD of Fire Alarm & Detection System at B2 | 30d | 2014-12-13 | 2015-01-17 | SD-CS-B3-702 SS+10d, SD-CS-B3-702 FF+10d | 336d | 295d | Shop Drawings Approval [40 h] |
|  | 2 | **Basement 1 Floor level - Shop drawings** |  | 2014-12-08 | 2015-01-24 |  |  |  |  |
| SD-CS-B2-442 |  | Preparation & Submittals of SD of Fire Alarm & Detection System at B1 | 30d | 2014-12-08 | 2015-01-12 | SD-CS-B3-702 SS+6d | 117d | 0d | Shop Drawings Submittals [60 h] |
| SD-CS-B2-452 |  | Review & Approval of SD of Fire Alarm & Detection System at B1 | 30d | 2014-12-21 | 2015-01-24 | SD-CS-B2-442 SS+10d, SD-CS-B2-442 FF+10d | 355d | 309d | Shop Drawings Approval [40 h] |
|  | 3 | **Ground Floor level - Shop drawings** |  | 2014-12-15 | 2015-01-31 |  |  |  |  |
| SD-CS-B1-442 |  | Preparation & Submittals of SD of Fire Alarm & Detection System at GF | 30d | 2014-12-15 | 2015-01-19 | SD-CS-B2-442 SS+6d, G-CD-003 | 117d | 0d | Shop Drawings Submittals [60 h] |
| SD-CS-B1-452 |  | Review & Approval of SD of Fire Alarm & Detection System at GF | 30d | 2014-12-28 | 2015-01-31 | SD-CS-B1-442 SS+10d, SD-CS-B1-442 FF+10d | 221d | 105d | Shop Drawings Approval [40 h] |
|  | 4 | **Mezzanine Floor level - Shop drawings** |  | 2014-12-23 | 2015-02-07 |  |  |  |  |
| SD-CS-GF-442 |  | Preparation & Submittals of SD of Fire Alarm & Detection System at ML | 30d | 2014-12-23 | 2015-01-26 | SD-CS-B1-442 SS+6d | 117d | 0d | Shop Drawings Submittals [60 h] |
| SD-CS-GF-452 |  | Review & Approval of SD of Fire Alarm & Detection System at ML | 30d | 2015-01-04 | 2015-02-07 | SD-CS-GF-442 SS+10d, SD-CS-GF-442 FF+10d | 262d | 79d | Shop Drawings Approval [40 h] |

| ID | WBS | Activity | Duration | Start | Finish | Predecessors | Total float | Free float | Resources |
| --- | --- | --- | --- | --- | --- | --- | --- | --- | --- |
|  | 5 | **Level 1 Floor - Shop drawings** |  | 2014-12-30 | 2015-02-15 |  |  |  |  |
| SD-CS-L1-462 |  | Preparation & Submittals of SD of Fire Alarm & Detection System at L1 | 30d | 2014-12-30 | 2015-02-02 | SD-CS-GF-442 SS+6d | 227d | 0d | Shop Drawings Submittals [60 h] |
| SD-CS-L1-472 |  | Review & Approval of SD of Fire Alarm & Detection System at L1 | 30d | 2015-01-11 | 2015-02-15 | SD-CS-L1-462 SS+10d, SD-CS-L1-462 FF+10d | 227d | 78d | Shop Drawings Approval [40 h] |
|  | 6 | **Level 2 Floor - Shop drawings** |  | 2014-12-30 | 2015-02-15 |  |  |  |  |
| SD-CS-L2-482 |  | Preparation & Submittals of SD of Fire Alarm & Detection System at L2 | 30d | 2014-12-30 | 2015-02-02 | SD-CS-GF-442 SS+6d | 117d | 0d | Shop Drawings Submittals [60 h] |
| SD-CS-L2-492 |  | Review & Approval of SD of Fire Alarm & Detection System at L2 | 30d | 2015-01-11 | 2015-02-15 | SD-CS-L2-482 SS+10d, SD-CS-L2-482 FF+10d | 236d | 110d | Shop Drawings Approval [40 h] |
|  | 7 | **Level 3 Floor - Shop drawings** |  | 2015-01-06 | 2015-02-22 |  |  |  |  |
| SD-CS-L3-502 |  | Preparation & Submittals of SD of Fire Alarm & Detection System at L3 | 30d | 2015-01-06 | 2015-02-09 | SD-CS-L2-482 SS+6d | 117d | 0d | Shop Drawings Submittals [60 h] |
| SD-CS-L3-512 |  | Review & Approval of SD of Fire Alarm & Detection System at L3 | 30d | 2015-01-18 | 2015-02-22 | SD-CS-L3-502 SS+10d, SD-CS-L3-502 FF+10d | 239d | 129d | Shop Drawings Approval [40 h] |
|  | 8 | **Level 4 Floor - Shop drawings** |  | 2015-01-13 | 2015-03-01 |  |  |  |  |
| SD-CS-L4-1522 |  | Preparation & Submittals of SD of Fire Alarm & Detection System at L4 | 30d | 2015-01-13 | 2015-02-17 | SD-CS-L3-502 SS+6d | 117d | 0d | Shop Drawings Submittals [60 h] |
| SD-CS-L4-1532 |  | Review & Approval of SD of Fire Alarm & Detection System at L4 | 30d | 2015-01-25 | 2015-03-01 | SD-CS-L4-1522 SS+10d, SD-CS-L4-1522 FF+10d | 230d | 109d | Shop Drawings Approval [40 h] |
|  | 9 | **Level 5 Floor - Shop drawings** |  | 2015-01-20 | 2015-03-08 |  |  |  |  |
| SD-CS-L5-542 |  | Preparation & Submittals of SD of Fire Alarm & Detection System at L5 | 30d | 2015-01-20 | 2015-02-24 | SD-CS-L4-1522 SS+6d | 117d | 0d | Shop Drawings Submittals [60 h] |
| SD-CS-L5-552 |  | Review & Approval of SD of Fire Alarm & Detection System at L5 | 30d | 2015-02-01 | 2015-03-08 | SD-CS-L5-542 SS+10d, SD-CS-L5-542 FF+10d | 253d | 121d | Shop Drawings Approval [40 h] |
|  | 10 | **Level 6 Floor - Shop drawings** |  | 2015-01-27 | 2015-03-15 |  |  |  |  |
| SD-CS-L6-562 |  | Preparation & Submittals of SD of Fire Alarm & Detection System at L6 | 30d | 2015-01-27 | 2015-03-03 | SD-CS-L5-542 SS+6d | 117d | 0d | Shop Drawings Submittals [60 h] |
| SD-CS-L6-572 |  | Review & Approval of SD of Fire Alarm & Detection System at L6 | 30d | 2015-02-08 | 2015-03-15 | SD-CS-L6-562 SS+10d, SD-CS-L6-562 FF+10d | 246d | 115d | Shop Drawings Approval [40 h] |
|  | 11 | **Level 7 Floor - Shop drawings** |  | 2015-02-03 | 2015-03-22 |  |  |  |  |
| SD-CS-L7-582 |  | Preparation & Submittals of SD of Fire Alarm & Detection System at L7 | 30d | 2015-02-03 | 2015-03-10 | SD-CS-L6-562 SS+6d | 117d | 0d | Shop Drawings Submittals [60 h] |
| SD-CS-L7-592 |  | Review & Approval of SD of Fire Alarm & Detection System at L7 | 30d | 2015-02-16 | 2015-03-22 | SD-CS-L7-582 SS+10d, SD-CS-L7-582 FF+10d | 241d | 109d | Shop Drawings Approval [40 h] |
|  | 12 | **Level 8 Floor - Shop drawings** |  | 2015-02-11 | 2015-03-29 |  |  |  |  |
| SD-CS-L8-602 |  | Preparation & Submittals of SD of Fire Alarm & Detection System at L8 | 30d | 2015-02-11 | 2015-03-17 | SD-CS-L7-582 SS+6d | 117d | 0d | Shop Drawings Submittals [60 h] |
| SD-CS-L8-612 |  | Review & Approval of SD of Fire Alarm & Detection System at L8 | 30d | 2015-02-23 | 2015-03-29 | SD-CS-L8-602 SS+10d, SD-CS-L8-602 FF+10d | 243d | 103d | Shop Drawings Approval [40 h] |

| ID | WBS | Activity | Duration | Start | Finish | Predecessors | Total float | Free float | Resources |
| --- | --- | --- | --- | --- | --- | --- | --- | --- | --- |
|  | 13 | **Level 9 Floor - Shop drawings** |  | 2015-02-18 | 2015-04-05 |  |  |  |  |
| SD-CS-L9-622 |  | Preparation & Submittals of SD of Fire Alarm & Detection System at L9 | 30d | 2015-02-18 | 2015-03-24 | SD-CS-L8-602 SS+6d | 117d | 0d | Shop Drawings Submittals [60 h] |
| SD-CS-L9-632 |  | Review & Approval of SD of Fire Alarm & Detection System at L9 | 30d | 2015-03-02 | 2015-04-05 | SD-CS-L9-622 SS+10d, SD-CS-L9-622 FF+10d | 246d | 106d | Shop Drawings Approval [40 h] |
|  | 14 | **Level 10 Floor - Shop drawings** |  | 2015-02-25 | 2015-04-12 |  |  |  |  |
| SD-CS-L10-642 |  | Preparation & Submittals of SD of Fire Alarm & Detection System at L10 | 30d | 2015-02-25 | 2015-03-31 | SD-CS-L9-622 SS+6d | 117d | 0d | Shop Drawings Submittals [60 h] |
| SD-CS-L10-652 |  | Review & Approval of SD of Fire Alarm & Detection System at L10 | 30d | 2015-03-09 | 2015-04-12 | SD-CS-L10-642 SS+10d, SD-CS-L10-642 FF+10d | 243d | 100d | Shop Drawings Approval [40 h] |
|  | 15 | **Level 11 Floor - Shop drawings** |  | 2015-03-04 | 2015-04-19 |  |  |  |  |
| SD-CS-L11-662 |  | Preparation & Submittals of SD of Fire Alarm & Detection System at L11 | 30d | 2015-03-04 | 2015-04-07 | SD-CS-L10-642 SS+6d | 117d | 0d | Shop Drawings Submittals [60 h] |
| SD-CS-L11-672 |  | Review & Approval of SD of Fire Alarm & Detection System at L11 | 30d | 2015-03-16 | 2015-04-19 | SD-CS-L11-662 SS+10d, SD-CS-L11-662 FF+10d | 267d | 94d | Shop Drawings Approval [40 h] |
|  | 16 | **Level 12 Floor - Shop drawings** |  | 2015-03-11 | 2015-04-26 |  |  |  |  |
| SD-CS-L12-682 |  | Preparation & Submittals of SD of Fire Alarm & Detection System at L12 | 30d | 2015-03-11 | 2015-04-14 | SD-CS-L11-662 SS+6d | 117d | 0d | Shop Drawings Submittals [60 h] |
| SD-CS-L12-692 |  | Review & Approval of SD of Fire Alarm & Detection System at L12 | 30d | 2015-03-23 | 2015-04-26 | SD-CS-L12-682 SS+10d, SD-CS-L12-682 FF+10d | 234d | 91d | Shop Drawings Approval [40 h] |
|  | 17 | **Level 13 Floor - Shop drawings** |  | 2015-03-18 | 2015-05-03 |  |  |  |  |
| SD-CS-L13-702 |  | Preparation & Submittals of SD of Fire Alarm & Detection System at L13 | 30d | 2015-03-18 | 2015-04-21 | SD-CS-L12-682 SS+6d | 117d | 0d | Shop Drawings Submittals [60 h] |
| SD-CS-L13-712 |  | Review & Approval of SD of Fire Alarm & Detection System at L13 | 30d | 2015-03-30 | 2015-05-03 | SD-CS-L13-702 SS+10d, SD-CS-L13-702 FF+10d | 229d | 99d | Shop Drawings Approval [40 h] |
|  | 18 | **Level 14 Floor - Shop drawings** |  | 2015-03-25 | 2015-05-10 |  |  |  |  |
| SD-CS-L14-722 |  | Preparation & Submittals of SD of Fire Alarm & Detection System at L14 | 30d | 2015-03-25 | 2015-04-28 | SD-CS-L13-702 SS+6d | 117d | 0d | Shop Drawings Submittals [60 h] |
| SD-CS-L14-732 |  | Review & Approval of SD of Fire Alarm & Detection System at L14 | 30d | 2015-04-06 | 2015-05-10 | SD-CS-L14-722 SS+10d, SD-CS-L14-722 FF+10d | 232d | 93d | Shop Drawings Approval [40 h] |
|  | 19 | **Level 15 Floor - Shop drawings** |  | 2015-04-01 | 2015-05-17 |  |  |  |  |
| SD-CS-L15-742 |  | Preparation & Submittals of SD of Fire Alarm & Detection System at L15 | 30d | 2015-04-01 | 2015-05-05 | SD-CS-L14-722 SS+6d | 117d | 0d | Shop Drawings Submittals [60 h] |
| SD-CS-L15-752 |  | Review & Approval of SD of Fire Alarm & Detection System at L15 | 30d | 2015-04-13 | 2015-05-17 | SD-CS-L15-742 SS+10d, SD-CS-L15-742 FF+10d | 234d | 101d | Shop Drawings Approval [40 h] |
|  | 20 | **Level 16 Floor - Shop drawings** |  | 2015-04-08 | 2015-05-24 |  |  |  |  |
| SD-CS-L16-762 |  | Preparation & Submittals of SD of Fire Alarm & Detection System at L16 | 30d | 2015-04-08 | 2015-05-12 | SD-CS-L15-742 SS+6d | 117d | 0d | Shop Drawings Submittals [60 h] |
| SD-CS-L16-772 |  | Review & Approval of SD of Fire Alarm & Detection System at L16 | 30d | 2015-04-20 | 2015-05-24 | SD-CS-L16-762 SS+10d, SD-CS-L16-762 FF+10d | 231d | 95d | Shop Drawings Approval [40 h] |

| ID | WBS | Activity | Duration | Start | Finish | Predecessors | Total float | Free float | Resources |
| --- | --- | --- | --- | --- | --- | --- | --- | --- | --- |
|  | 21 | **Level 17 Floor - Shop drawings** |  | 2015-04-15 | 2015-05-31 |  |  |  |  |
| SD-CS-L17-1542 |  | Preparation & Submittals of SD of Fire Alarm & Detection System at L17 | 30d | 2015-04-15 | 2015-05-19 | SD-CS-L16-762 SS+6d | 117d | 0d | Shop Drawings Submittals [60 h] |
| SD-CS-L17-1552 |  | Review & Approval of SD of Fire Alarm & Detection System at L17 | 30d | 2015-04-27 | 2015-05-31 | SD-CS-L17-1542 SS+10d, SD-CS-L17-1542 FF+10d | 281d | 103d | Shop Drawings Approval [40 h] |
|  | 22 | **Level 18 Floor - Shop drawings** |  | 2015-04-22 | 2015-06-07 |  |  |  |  |
| SD-CS-L18-802 |  | Preparation & Submittals of SD of Fire Alarm & Detection System at L18 | 30d | 2015-04-22 | 2015-05-26 | SD-CS-L17-1542 SS+6d | 117d | 0d | Shop Drawings Submittals [60 h] |
| SD-CS-L18-812 |  | Review & Approval of SD of Fire Alarm & Detection System at L18 | 30d | 2015-05-04 | 2015-06-07 | SD-CS-L18-802 SS+10d, SD-CS-L18-802 FF+10d | 222d | 99d | Shop Drawings Approval [40 h] |
|  | 23 | **Level 19 Floor - Shop drawings** |  | 2015-04-29 | 2015-06-14 |  |  |  |  |
| SD-CS-L19-822 |  | Preparation & Submittals of SD of Fire Alarm & Detection System at L19 | 30d | 2015-04-29 | 2015-06-02 | SD-CS-L18-802 SS+6d | 117d | 0d | Shop Drawings Submittals [60 h] |
| SD-CS-L19-832 |  | Review & Approval of SD of Fire Alarm & Detection System at L19 | 30d | 2015-05-11 | 2015-06-14 | SD-CS-L19-822 SS+10d, SD-CS-L19-822 FF+10d | 216d | 100d | Shop Drawings Approval [40 h] |
|  | 24 | **Level 20 Floor - Shop drawings** |  | 2015-05-06 | 2015-06-21 |  |  |  |  |
| SD-CS-L20-842 |  | Preparation & Submittals of SD of Fire Alarm & Detection System at L20 | 30d | 2015-05-06 | 2015-06-09 | SD-CS-L19-822 SS+6d | 117d | 0d | Shop Drawings Submittals [60 h] |
| SD-CS-L20-852 |  | Review & Approval of SD of Fire Alarm & Detection System at L20 | 30d | 2015-05-18 | 2015-06-21 | SD-CS-L20-842 SS+10d, SD-CS-L20-842 FF+10d | 219d | 101d | Shop Drawings Approval [40 h] |
|  | 25 | **Level 21 Floor - Shop drawings** |  | 2015-05-13 | 2015-06-28 |  |  |  |  |
| SD-CS-L21-862 |  | Preparation & Submittals of SD of Fire Alarm & Detection System at L21 | 30d | 2015-05-13 | 2015-06-16 | SD-CS-L20-842 SS+6d | 117d | 0d | Shop Drawings Submittals [60 h] |
| SD-CS-L21-872 |  | Review & Approval of SD of Fire Alarm & Detection System at L21 | 30d | 2015-05-25 | 2015-06-28 | SD-CS-L21-862 SS+10d, SD-CS-L21-862 FF+10d | 221d | 109d | Shop Drawings Approval [40 h] |
|  | 26 | **Level 22 Floor - Shop drawings** |  | 2015-05-20 | 2015-07-05 |  |  |  |  |
| SD-CS-L22-882 |  | Preparation & Submittals of SD of Fire Alarm & Detection System at L22 | 30d | 2015-05-20 | 2015-06-23 | SD-CS-L21-862 SS+6d | 117d | 0d | Shop Drawings Submittals [60 h] |
| SD-CS-L22-892 |  | Review & Approval of SD of Fire Alarm & Detection System at L22 | 30d | 2015-06-01 | 2015-07-05 | SD-CS-L22-882 SS+10d, SD-CS-L22-882 FF+10d | 218d | 103d | Shop Drawings Approval [40 h] |
|  | 27 | **Level 23 Floor - Shop drawings** |  | 2015-05-27 | 2015-07-12 |  |  |  |  |
| SD-CS-L23-902 |  | Preparation & Submittals of SD of Fire Alarm & Detection System at L23 | 30d | 2015-05-27 | 2015-06-30 | SD-CS-L22-882 SS+6d | 117d | 0d | Shop Drawings Submittals [60 h] |
| SD-CS-L23-912 |  | Review & Approval of SD of Fire Alarm & Detection System at L23 | 30d | 2015-06-08 | 2015-07-12 | SD-CS-L23-902 SS+10d, SD-CS-L23-902 FF+10d | 231d | 111d | Shop Drawings Approval [40 h] |
|  | 28 | **Level 24 Floor - Shop drawings** |  | 2015-06-03 | 2015-07-21 |  |  |  |  |
| SD-CS-L24-922 |  | Preparation & Submittals of SD of Fire Alarm & Detection System at L24 | 30d | 2015-06-03 | 2015-07-07 | SD-CS-L23-902 SS+6d | 117d | 0d | Shop Drawings Submittals [60 h] |
| SD-CS-L24-932 |  | Review & Approval of SD of Fire Alarm & Detection System at L24 | 30d | 2015-06-15 | 2015-07-21 | SD-CS-L24-922 SS+10d, SD-CS-L24-922 FF+10d | 209d | 105d | Shop Drawings Approval [40 h] |

| ID | WBS | Activity | Duration | Start | Finish | Predecessors | Total float | Free float | Resources |
| --- | --- | --- | --- | --- | --- | --- | --- | --- | --- |
|  | 29 | **Level 25 Floor - Shop drawings** |  | 2015-06-10 | 2015-07-28 |  |  |  |  |
| SD-CS-L25-942 |  | Preparation & Submittals of SD of Fire Alarm & Detection System at L25 | 30d | 2015-06-10 | 2015-07-14 | SD-CS-L24-922 SS+6d | 117d | 0d | Shop Drawings Submittals [60 h] |
| SD-CS-L25-952 |  | Review & Approval of SD of Fire Alarm & Detection System at L25 | 30d | 2015-06-22 | 2015-07-28 | SD-CS-L25-942 SS+10d, SD-CS-L25-942 FF+10d | 203d | 102d | Shop Drawings Approval [40 h] |
|  | 30 | **Level 26 Floor - Shop drawings** |  | 2015-06-17 | 2015-08-04 |  |  |  |  |
| SD-CS-L26-962 |  | Preparation & Submittals of SD of Fire Alarm & Detection System at L26 | 30d | 2015-06-17 | 2015-07-23 | SD-CS-L25-942 SS+6d | 117d | 0d | Shop Drawings Submittals [60 h] |
| SD-CS-L26-972 |  | Review & Approval of SD of Fire Alarm & Detection System at L26 | 30d | 2015-06-29 | 2015-08-04 | SD-CS-L26-962 SS+10d, SD-CS-L26-962 FF+10d | 206d | 102d | Shop Drawings Approval [40 h] |
|  | 31 | **Level 27 Floor - Shop drawings** |  | 2015-06-24 | 2015-08-11 |  |  |  |  |
| SD-CS-L27-982 |  | Preparation & Submittals of SD of Fire Alarm & Detection System at L27 | 30d | 2015-06-24 | 2015-07-30 | SD-CS-L26-962 SS+6d | 117d | 0d | Shop Drawings Submittals [60 h] |
| SD-CS-L27-992 |  | Review & Approval of SD of Fire Alarm & Detection System at L27 | 30d | 2015-07-06 | 2015-08-11 | SD-CS-L27-982 SS+10d, SD-CS-L27-982 FF+10d | 208d | 102d | Shop Drawings Approval [40 h] |
|  | 32 | **Level 28 Floor - Shop drawings** |  | 2015-07-01 | 2015-08-18 |  |  |  |  |
| SD-CS-L28-1002 |  | Preparation & Submittals of SD of Fire Alarm & Detection System at L28 | 30d | 2015-07-01 | 2015-08-06 | SD-CS-L27-982 SS+6d | 117d | 0d | Shop Drawings Submittals [60 h] |
| SD-CS-L28-1012 |  | Review & Approval of SD of Fire Alarm & Detection System at L28 | 30d | 2015-07-13 | 2015-08-18 | SD-CS-L28-1002 SS+10d, SD-CS-L28-1002 FF+10d | 205d | 110d | Shop Drawings Approval [40 h] |
|  | 33 | **Level 29 Floor - Shop drawings** |  | 2015-07-08 | 2015-08-25 |  |  |  |  |
| SD-CS-L29-1022 |  | Preparation & Submittals of SD of Fire Alarm & Detection System at L29 | 30d | 2015-07-08 | 2015-08-13 | SD-CS-L28-1002 SS+6d | 117d | 0d | Shop Drawings Submittals [60 h] |
| SD-CS-L29-1032 |  | Review & Approval of SD of Fire Alarm & Detection System at L29 | 30d | 2015-07-22 | 2015-08-25 | SD-CS-L29-1022 SS+10d, SD-CS-L29-1022 FF+10d | 205d | 104d | Shop Drawings Approval [40 h] |
|  | 34 | **Level 30 Floor - Shop drawings** |  | 2015-07-18 | 2015-09-01 |  |  |  |  |
| SD-CS-L30-1042 |  | Preparation & Submittals of SD of Fire Alarm & Detection System at L30 | 30d | 2015-07-18 | 2015-08-20 | SD-CS-L29-1022 SS+6d | 117d | 0d | Shop Drawings Submittals [60 h] |
| SD-CS-L30-1052 |  | Review & Approval of SD of Fire Alarm & Detection System at L30 | 30d | 2015-07-29 | 2015-09-01 | SD-CS-L30-1042 SS+10d, SD-CS-L30-1042 FF+10d | 171d | 102d | Shop Drawings Approval [40 h] |
|  | 35 | **Level 31 Floor - Shop drawings** |  | 2015-07-25 | 2015-09-08 |  |  |  |  |
| SD-CS-L31-1062 |  | Preparation & Submittals of SD of Fire Alarm & Detection System at L31 | 30d | 2015-07-25 | 2015-08-27 | SD-CS-L30-1042 SS+6d | 117d | 0d | Shop Drawings Submittals [60 h] |
| SD-CS-L31-1072 |  | Review & Approval of SD of Fire Alarm & Detection System at L31 | 30d | 2015-08-05 | 2015-09-08 | SD-CS-L31-1062 SS+10d, SD-CS-L31-1062 FF+10d | 165d | 110d | Shop Drawings Approval [40 h] |
|  | 36 | **Level 32 Floor - Shop drawings** |  | 2015-08-01 | 2015-09-15 |  |  |  |  |
| SD-CS-L32-1082 |  | Preparation & Submittals of SD of Fire Alarm & Detection System at L32 | 30d | 2015-08-01 | 2015-09-03 | SD-CS-L31-1062 SS+6d | 117d | 0d | Shop Drawings Submittals [60 h] |
| SD-CS-L32-1092 |  | Review & Approval of SD of Fire Alarm & Detection System at L32 | 30d | 2015-08-12 | 2015-09-15 | SD-CS-L32-1082 SS+10d, SD-CS-L32-1082 FF+10d | 168d | 105d | Shop Drawings Approval [40 h] |

| ID | WBS | Activity | Duration | Start | Finish | Predecessors | Total float | Free float | Resources |
| --- | --- | --- | --- | --- | --- | --- | --- | --- | --- |
|  | 37 | **Level 33 Floor - Shop drawings** |  | 2015-08-08 | 2015-09-26 |  |  |  |  |
| SD-CS-L33-1102 |  | Preparation & Submittals of SD of Fire Alarm & Detection System at L33 | 30d | 2015-08-08 | 2015-09-10 | SD-CS-L32-1082 SS+6d | 117d | 0d | Shop Drawings Submittals [60 h] |
| SD-CS-L33-1112 |  | Review & Approval of SD of Fire Alarm & Detection System at L33 | 30d | 2015-08-19 | 2015-09-26 | SD-CS-L33-1102 SS+10d, SD-CS-L33-1102 FF+10d | 151d | 105d | Shop Drawings Approval [40 h] |
|  | 38 | **Level 34 Floor - Shop drawings** |  | 2015-08-15 | 2015-10-03 |  |  |  |  |
| SD-CS-L34-1122 |  | Preparation & Submittals of SD of Fire Alarm & Detection System at L34 | 30d | 2015-08-15 | 2015-09-17 | SD-CS-L33-1102 SS+6d | 117d | 0d | Shop Drawings Submittals [60 h] |
| SD-CS-L34-1132 |  | Review & Approval of SD of Fire Alarm & Detection System at L34 | 30d | 2015-08-26 | 2015-10-03 | SD-CS-L34-1122 SS+10d, SD-CS-L34-1122 FF+10d | 160d | 105d | Shop Drawings Approval [40 h] |
|  | 39 | **Level 35 Floor - Shop drawings** |  | 2015-08-22 | 2015-10-10 |  |  |  |  |
| SD-CS-L35-1142 |  | Preparation & Submittals of SD of Fire Alarm & Detection System at L35 | 30d | 2015-08-22 | 2015-09-28 | SD-CS-L34-1122 SS+6d | 117d | 0d | Shop Drawings Submittals [60 h] |
| SD-CS-L35-1152 |  | Review & Approval of SD of Fire Alarm & Detection System at L35 | 30d | 2015-09-02 | 2015-10-10 | SD-CS-L35-1142 SS+10d, SD-CS-L35-1142 FF+10d | 154d | 113d | Shop Drawings Approval [40 h] |
|  | 40 | **Level 36 Floor - Shop drawings** |  | 2015-08-29 | 2015-10-17 |  |  |  |  |
| SD-CS-L36-1162 |  | Preparation & Submittals of SD of Fire Alarm & Detection System at L36 | 30d | 2015-08-29 | 2015-10-05 | SD-CS-L35-1142 SS+6d | 117d | 0d | Shop Drawings Submittals [60 h] |
| SD-CS-L36-1172 |  | Review & Approval of SD of Fire Alarm & Detection System at L36 | 30d | 2015-09-09 | 2015-10-17 | SD-CS-L36-1162 SS+10d, SD-CS-L36-1162 FF+10d | 148d | 107d | Shop Drawings Approval [40 h] |
|  | 41 | **Level 37 Floor - Shop drawings** |  | 2015-09-05 | 2015-10-24 |  |  |  |  |
| SD-CS-L37-1182 |  | Preparation & Submittals of SD of Fire Alarm & Detection System at L37 | 30d | 2015-09-05 | 2015-10-12 | SD-CS-L36-1162 SS+6d | 117d | 0d | Shop Drawings Submittals [60 h] |
| SD-CS-L37-1192 |  | Review & Approval of SD of Fire Alarm & Detection System at L37 | 30d | 2015-09-16 | 2015-10-24 | SD-CS-L37-1182 SS+10d, SD-CS-L37-1182 FF+10d | 152d | 105d | Shop Drawings Approval [40 h] |
|  | 42 | **Level 38 Floor - Shop drawings** |  | 2015-09-12 | 2015-10-31 |  |  |  |  |
| SD-CS-L38-1202 |  | Preparation & Submittals of SD of Fire Alarm & Detection System at L38 | 30d | 2015-09-12 | 2015-10-19 | SD-CS-L37-1182 SS+6d | 117d | 0d | Shop Drawings Submittals [60 h] |
| SD-CS-L38-1212 |  | Review & Approval of SD of Fire Alarm & Detection System at L38 | 30d | 2015-09-27 | 2015-10-31 | SD-CS-L38-1202 SS+10d, SD-CS-L38-1202 FF+10d | 155d | 105d | Shop Drawings Approval [40 h] |
|  | 43 | **Level 39 Floor - Shop drawings** |  | 2015-09-19 | 2015-11-07 |  |  |  |  |
| SD-CS-L39-1222 |  | Preparation & Submittals of SD of Fire Alarm & Detection System at L39 | 30d | 2015-09-19 | 2015-10-26 | SD-CS-L38-1202 SS+6d | 117d | 0d | Shop Drawings Submittals [60 h] |
| SD-CS-L39-1232 |  | Review & Approval of SD of Fire Alarm & Detection System at L39 | 30d | 2015-10-04 | 2015-11-07 | SD-CS-L39-1222 SS+10d, SD-CS-L39-1222 FF+10d | 152d | 113d | Shop Drawings Approval [40 h] |
|  | 44 | **Level 40 Floor - Shop drawings** |  | 2015-09-29 | 2015-11-14 |  |  |  |  |
| SD-CS-L40-1242 |  | Preparation & Submittals of SD of Fire Alarm & Detection System at L40 | 30d | 2015-09-29 | 2015-11-02 | SD-CS-L39-1222 SS+6d | 117d | 0d | Shop Drawings Submittals [60 h] |
| SD-CS-L40-1252 |  | Review & Approval of SD of Fire Alarm & Detection System at L40 | 30d | 2015-10-11 | 2015-11-14 | SD-CS-L40-1242 SS+10d, SD-CS-L40-1242 FF+10d | 144d | 107d | Shop Drawings Approval [40 h] |

| ID | WBS | Activity | Duration | Start | Finish | Predecessors | Total float | Free float | Resources |
| --- | --- | --- | --- | --- | --- | --- | --- | --- | --- |
|  | 45 | **Level 41 Floor - Shop drawings** |  | 2015-10-06 | 2015-11-21 |  |  |  |  |
| SD-CS-L41-1262 |  | Preparation & Submittals of SD of Fire Alarm & Detection System at L41 | 30d | 2015-10-06 | 2015-11-09 | SD-CS-L40-1242 SS+6d | 117d | 0d | Shop Drawings Submittals [60 h] |
| SD-CS-L41-1272 |  | Review & Approval of SD of Fire Alarm & Detection System at L41 | 30d | 2015-10-18 | 2015-11-21 | SD-CS-L41-1262 SS+10d, SD-CS-L41-1262 FF+10d | 143d | 105d | Shop Drawings Approval [40 h] |
|  | 46 | **Level 42 Floor - Shop drawings** |  | 2015-10-13 | 2015-11-28 |  |  |  |  |
| SD-CS-L42-1282 |  | Preparation & Submittals of SD of Fire Alarm & Detection System at L42 | 30d | 2015-10-13 | 2015-11-16 | SD-CS-L41-1262 SS+6d | 117d | 0d | Shop Drawings Submittals [60 h] |
| SD-CS-L42-1292 |  | Review & Approval of SD of Fire Alarm & Detection System at L42 | 30d | 2015-10-25 | 2015-11-28 | SD-CS-L42-1282 SS+10d, SD-CS-L42-1282 FF+10d | 137d | 93d | Shop Drawings Approval [40 h] |
|  | 47 | **Level 43 Floor - Shop drawings** |  | 2015-10-20 | 2015-12-05 |  |  |  |  |
| SD-CS-L43-1302 |  | Preparation & Submittals of SD of Fire Alarm & Detection System at L43 | 30d | 2015-10-20 | 2015-11-23 | SD-CS-L42-1282 SS+6d | 117d | 0d | Shop Drawings Submittals [60 h] |
| SD-CS-L43-1312 |  | Review & Approval of SD of Fire Alarm & Detection System at L43 | 30d | 2015-11-01 | 2015-12-05 | SD-CS-L43-1302 SS+10d, SD-CS-L43-1302 FF+10d | 126d | 107d | Shop Drawings Approval [40 h] |
|  | 48 | **Level 44 Floor - Shop drawings** |  | 2015-10-27 | 2015-12-12 |  |  |  |  |
| SD-CS-L44-1322 |  | Preparation & Submittals of SD of Fire Alarm & Detection System at L44 | 30d | 2015-10-27 | 2015-11-30 | SD-CS-L43-1302 SS+6d | 117d | 0d | Shop Drawings Submittals [60 h] |
| SD-CS-L44-1332 |  | Review & Approval of SD of Fire Alarm & Detection System at L44 | 30d | 2015-11-08 | 2015-12-12 | SD-CS-L44-1322 SS+10d, SD-CS-L44-1322 FF+10d | 140d | 105d | Shop Drawings Approval [40 h] |
|  | 49 | **Level 45 Floor - Shop drawings** |  | 2015-11-03 | 2015-12-20 |  |  |  |  |
| SD-CS-L45-1342 |  | Preparation & Submittals of SD of Fire Alarm & Detection System at L45 | 30d | 2015-11-03 | 2015-12-07 | SD-CS-L44-1322 SS+6d | 117d | 0d | Shop Drawings Submittals [60 h] |
| SD-CS-L45-1352 |  | Review & Approval of SD of Fire Alarm & Detection System at L45 | 30d | 2015-11-15 | 2015-12-20 | SD-CS-L45-1342 SS+10d, SD-CS-L45-1342 FF+10d | 134d | 112d | Shop Drawings Approval [40 h] |
|  | 50 | **Level 46 Floor - Shop drawings** |  | 2015-11-10 | 2015-12-27 |  |  |  |  |
| SD-CS-L46-1362 |  | Preparation & Submittals of SD of Fire Alarm & Detection System at L46 | 30d | 2015-11-10 | 2015-12-14 | SD-CS-L45-1342 SS+6d | 117d | 0d | Shop Drawings Submittals [60 h] |
| SD-CS-L46-1372 |  | Review & Approval of SD of Fire Alarm & Detection System at L46 | 30d | 2015-11-22 | 2015-12-27 | SD-CS-L46-1362 SS+10d, SD-CS-L46-1362 FF+10d | 128d | 107d | Shop Drawings Approval [40 h] |
|  | 53 | **Level 47 Floor - Shop drawings** |  | 2015-11-17 | 2016-01-03 |  |  |  |  |
| SD-CS-L47-1382 |  | Preparation & Submittals of SD of Fire Alarm & Detection System at L47 | 30d | 2015-11-17 | 2015-12-22 | SD-CS-L46-1362 SS+6d | 117d | 0d | Shop Drawings Submittals [60 h] |
| SD-CS-L47-1392 |  | Review & Approval of SD of Fire Alarm & Detection System at L47 | 30d | 2015-11-29 | 2016-01-03 | SD-CS-L47-1382 SS+10d, SD-CS-L47-1382 FF+10d | 122d | 105d | Shop Drawings Approval [40 h] |
|  | 51 | **Level 48 Floor - Shop drawings** |  | 2015-11-24 | 2016-01-10 |  |  |  |  |
| SD-CS-L48-1402 |  | Preparation & Submittals of SD of Fire Alarm & Detection System at L48 | 30d | 2015-11-24 | 2015-12-29 | SD-CS-L47-1382 SS+6d | 117d | 0d | Shop Drawings Submittals [60 h] |
| SD-CS-L48-1412 |  | Review & Approval of SD of Fire Alarm & Detection System at L48 | 30d | 2015-12-06 | 2016-01-10 | SD-CS-L48-1402 SS+10d, SD-CS-L48-1402 FF+10d | 122d | 100d | Shop Drawings Approval [40 h] |

| ID | WBS | Activity | Duration | Start | Finish | Predecessors | Total float | Free float | Resources |
| --- | --- | --- | --- | --- | --- | --- | --- | --- | --- |
|  | 52 | **Level 49 Floor - Shop drawings** |  | 2015-12-01 | 2016-01-17 |  |  |  |  |
| SD-CS-L49-1422 |  | Preparation & Submittals of SD of Fire Alarm & Detection System at L49 | 30d | 2015-12-01 | 2016-01-05 | SD-CS-L48-1402 SS+6d | 117d | 0d | Shop Drawings Submittals [60 h] |
| SD-CS-L49-1432 |  | Review & Approval of SD of Fire Alarm & Detection System at L49 | 30d | 2015-12-13 | 2016-01-17 | SD-CS-L49-1422 SS+10d, SD-CS-L49-1422 FF+10d | 122d | 104d | Shop Drawings Approval [40 h] |
|  | 54 | **Level 50 Floor - Shop drawings** |  | 2015-12-08 | 2016-01-24 |  |  |  |  |
| SD-CS-L50-1442 |  | Preparation & Submittals of SD of Fire Alarm & Detection System at L50 | 30d | 2015-12-08 | 2016-01-12 | SD-CS-L49-1422 SS+6d | 117d | 0d | Shop Drawings Submittals [60 h] |
| SD-CS-L50-1452 |  | Review & Approval of SD of Fire Alarm & Detection System at L50 | 30d | 2015-12-21 | 2016-01-24 | SD-CS-L50-1442 SS+10d, SD-CS-L50-1442 FF+10d | 119d | 106d | Shop Drawings Approval [40 h] |
|  | 55 | **Level 51 Floor - Shop drawings** |  | 2015-12-15 | 2016-01-31 |  |  |  |  |
| SD-CS-L51-2282 |  | Preparation & Submittals of SD of Fire Alarm & Detection System at L51 | 30d | 2015-12-15 | 2016-01-19 | SD-CS-L50-1442 SS+6d | 117d | 0d | Shop Drawings Submittals [60 h] |
| SD-CS-L51-2292 |  | Review & Approval of SD of Fire Alarm & Detection System at L51 | 30d | 2015-12-28 | 2016-01-31 | SD-CS-L51-2282 SS+10d, SD-CS-L51-2282 FF+10d | 117d | 80d | Shop Drawings Approval [40 h] |
|  | 2 | **Music System & Public Address System** |  | 2014-11-24 | 2016-01-19 |  |  |  |  |
|  | R | **Basement 3 Floor level - Shop drawings** |  | 2014-11-24 | 2015-01-10 |  |  |  |  |
| SD-CS-B3-682 |  | Preparation & Submittals of SD of Music & Public Addres System at B3 | 30d | 2014-11-24 | 2014-12-29 | PQ-CS-C-492 | 107d | 0d | Shop Drawings Submittals [60 h] |
| SD-CS-B3-692 |  | Review & Approval of SD of Music & Public Addres System at B3 | 30d | 2014-12-06 | 2015-01-10 | SD-CS-B3-682 SS+10d, SD-CS-B3-682 FF+10d | 405d | 281d | Shop Drawings Approval [40 h] |
|  | 1 | **Basement 2 Floor level - Shop drawings** |  | 2014-12-01 | 2015-01-17 |  |  |  |  |
| SD-CS-B3-662 |  | Preparation & Submittals of SD of Music & Public Addres System at B2 | 30d | 2014-12-01 | 2015-01-05 | SD-CS-B3-682 SS+6d | 107d | 0d | Shop Drawings Submittals [60 h] |
| SD-CS-B3-672 |  | Review & Approval of SD of Music & Public Addres System at B2 | 30d | 2014-12-13 | 2015-01-17 | SD-CS-B3-662 SS+10d, SD-CS-B3-662 FF+10d | 331d | 295d | Shop Drawings Approval [40 h] |
|  | 2 | **Basement 1 Floor level - Shop drawings** |  | 2014-12-08 | 2015-01-24 |  |  |  |  |
| SD-CS-B2-422 |  | Preparation & Submittals of SD of Music & Public Addres System at B1 | 30d | 2014-12-08 | 2015-01-12 | SD-CS-B3-662 SS+6d | 107d | 0d | Shop Drawings Submittals [60 h] |
| SD-CS-B2-432 |  | Review & Approval of SD of Music & Public Addres System at B1 | 30d | 2014-12-21 | 2015-01-24 | SD-CS-B2-422 SS+10d, SD-CS-B2-422 FF+10d | 350d | 309d | Shop Drawings Approval [40 h] |
|  | 3 | **Ground Floor level - Shop drawings** |  | 2014-12-15 | 2015-01-31 |  |  |  |  |
| SD-CS-B1-422 |  | Preparation & Submittals of SD of Music & Public Addres System at GF | 30d | 2014-12-15 | 2015-01-19 | SD-CS-B2-422 SS+6d, G-CD-003 | 107d | 0d | Shop Drawings Submittals [60 h] |
| SD-CS-B1-432 |  | Review & Approval of SD of Music & Public Addres System at GF | 30d | 2014-12-28 | 2015-01-31 | SD-CS-B1-422 SS+10d, SD-CS-B1-422 FF+10d | 107d | 45d | Shop Drawings Approval [40 h] |
|  | 4 | **Mezzanine Floor level - Shop drawings** |  | 2014-12-23 | 2015-02-07 |  |  |  |  |
| SD-CS-GF-422 |  | Preparation & Submittals of SD of Music & Public Addres System at ML | 30d | 2014-12-23 | 2015-01-26 | SD-CS-B1-422 SS+6d | 121d | 0d | Shop Drawings Submittals [60 h] |
| SD-CS-GF-432 |  | Review & Approval of SD of Music & Public Addres System at ML | 30d | 2015-01-04 | 2015-02-07 | SD-CS-GF-422 SS+10d, SD-CS-GF-422 FF+10d | 121d | 59d | Shop Drawings Approval [40 h] |

| ID | WBS | Activity | Duration | Start | Finish | Predecessors | Total float | Free float | Resources |
| --- | --- | --- | --- | --- | --- | --- | --- | --- | --- |
|  | 5 | **Level 1 Floor - Shop drawings** |  | 2014-12-24 | 2015-02-08 |  |  |  |  |
| SD-CS-L1-442 |  | Preparation & Submittals of SD of Music & Public Addres System at L1 | 30d | 2014-12-24 | 2015-01-27 | SD-CS-GF-422 SS+1d | 140d | 0d | Shop Drawings Submittals [60 h] |
| SD-CS-L1-452 |  | Review & Approval of SD of Music & Public Addres System at L1 | 30d | 2015-01-05 | 2015-02-08 | SD-CS-L1-442 SS+10d, SD-CS-L1-442 FF+10d | 140d | 78d | Shop Drawings Approval [40 h] |
|  | 6 | **Level 2 Floor - Shop drawings** |  | 2014-12-24 | 2015-02-08 |  |  |  |  |
| SD-CS-L2-462 |  | Preparation & Submittals of SD of Music & Public Addres System at L2 | 30d | 2014-12-24 | 2015-01-27 | SD-CS-GF-422 SS+1d | 128d | 0d | Shop Drawings Submittals [60 h] |
| SD-CS-L2-472 |  | Review & Approval of SD of Music & Public Addres System at L2 | 30d | 2015-01-05 | 2015-02-08 | SD-CS-L2-462 SS+10d, SD-CS-L2-462 FF+10d | 180d | 118d | Shop Drawings Approval [40 h] |
|  | 7 | **Level 3 Floor - Shop drawings** |  | 2014-12-25 | 2015-02-09 |  |  |  |  |
| SD-CS-L3-482 |  | Preparation & Submittals of SD of Music & Public Addres System at L3 | 30d | 2014-12-25 | 2015-01-28 | SD-CS-L2-462 SS+1d | 128d | 0d | Shop Drawings Submittals [60 h] |
| SD-CS-L3-492 |  | Review & Approval of SD of Music & Public Addres System at L3 | 30d | 2015-01-06 | 2015-02-09 | SD-CS-L3-482 SS+10d, SD-CS-L3-482 FF+10d | 199d | 137d | Shop Drawings Approval [40 h] |
|  | 8 | **Level 4 Floor - Shop drawings** |  | 2015-01-01 | 2015-02-17 |  |  |  |  |
| SD-CS-L4-1502 |  | Preparation & Submittals of SD of Music & Public Addres System at L4 | 30d | 2015-01-01 | 2015-02-04 | SD-CS-L3-482 SS+6d | 128d | 0d | Shop Drawings Submittals [60 h] |
| SD-CS-L4-1512 |  | Review & Approval of SD of Music & Public Addres System at L4 | 30d | 2015-01-13 | 2015-02-17 | SD-CS-L4-1502 SS+10d, SD-CS-L4-1502 FF+10d | 213d | 151d | Shop Drawings Approval [40 h] |
|  | 9 | **Level 5 Floor - Shop drawings** |  | 2015-01-08 | 2015-02-24 |  |  |  |  |
| SD-CS-L5-522 |  | Preparation & Submittals of SD of Music & Public Addres System at L5 | 30d | 2015-01-08 | 2015-02-12 | SD-CS-L4-1502 SS+6d | 128d | 0d | Shop Drawings Submittals [60 h] |
| SD-CS-L5-532 |  | Review & Approval of SD of Music & Public Addres System at L5 | 30d | 2015-01-20 | 2015-02-24 | SD-CS-L5-522 SS+10d, SD-CS-L5-522 FF+10d | 207d | 145d | Shop Drawings Approval [40 h] |
|  | 10 | **Level 6 Floor - Shop drawings** |  | 2015-01-15 | 2015-03-03 |  |  |  |  |
| SD-CS-L6-542 |  | Preparation & Submittals of SD of Music & Public Addres System at L6 | 30d | 2015-01-15 | 2015-02-19 | SD-CS-L5-522 SS+6d | 128d | 0d | Shop Drawings Submittals [60 h] |
| SD-CS-L6-552 |  | Review & Approval of SD of Music & Public Addres System at L6 | 30d | 2015-01-27 | 2015-03-03 | SD-CS-L6-542 SS+10d, SD-CS-L6-542 FF+10d | 221d | 159d | Shop Drawings Approval [40 h] |
|  | 11 | **Level 7 Floor - Shop drawings** |  | 2015-01-22 | 2015-03-10 |  |  |  |  |
| SD-CS-L7-562 |  | Preparation & Submittals of SD of Music & Public Addres System at L7 | 30d | 2015-01-22 | 2015-02-26 | SD-CS-L6-542 SS+6d | 128d | 0d | Shop Drawings Submittals [60 h] |
| SD-CS-L7-572 |  | Review & Approval of SD of Music & Public Addres System at L7 | 30d | 2015-02-03 | 2015-03-10 | SD-CS-L7-562 SS+10d, SD-CS-L7-562 FF+10d | 235d | 173d | Shop Drawings Approval [40 h] |
|  | 12 | **Level 8 Floor - Shop drawings** |  | 2015-01-29 | 2015-03-17 |  |  |  |  |
| SD-CS-L8-582 |  | Preparation & Submittals of SD of Music & Public Addres System at L8 | 30d | 2015-01-29 | 2015-03-05 | SD-CS-L7-562 SS+6d | 128d | 0d | Shop Drawings Submittals [60 h] |
| SD-CS-L8-592 |  | Review & Approval of SD of Music & Public Addres System at L8 | 30d | 2015-02-11 | 2015-03-17 | SD-CS-L8-582 SS+10d, SD-CS-L8-582 FF+10d | 249d | 187d | Shop Drawings Approval [40 h] |

| ID | WBS | Activity | Duration | Start | Finish | Predecessors | Total float | Free float | Resources |
| --- | --- | --- | --- | --- | --- | --- | --- | --- | --- |
|  | 13 | **Level 9 Floor - Shop drawings** |  | 2015-02-05 | 2015-03-24 |  |  |  |  |
| SD-CS-L9-602 |  | Preparation & Submittals of SD of Music & Public Addres System at L9 | 30d | 2015-02-05 | 2015-03-12 | SD-CS-L8-582 SS+6d | 128d | 0d | Shop Drawings Submittals [60 h] |
| SD-CS-L9-612 |  | Review & Approval of SD of Music & Public Addres System at L9 | 30d | 2015-02-18 | 2015-03-24 | SD-CS-L9-602 SS+10d, SD-CS-L9-602 FF+10d | 243d | 181d | Shop Drawings Approval [40 h] |
|  | 14 | **Level 10 Floor - Shop drawings** |  | 2015-02-14 | 2015-03-31 |  |  |  |  |
| SD-CS-L10-622 |  | Preparation & Submittals of SD of Music & Public Addres System at L10 | 30d | 2015-02-14 | 2015-03-19 | SD-CS-L9-602 SS+6d | 128d | 0d | Shop Drawings Submittals [60 h] |
| SD-CS-L10-632 |  | Review & Approval of SD of Music & Public Addres System at L10 | 30d | 2015-02-25 | 2015-03-31 | SD-CS-L10-622 SS+10d, SD-CS-L10-622 FF+10d | 237d | 175d | Shop Drawings Approval [40 h] |
|  | 15 | **Level 11 Floor - Shop drawings** |  | 2015-02-21 | 2015-04-07 |  |  |  |  |
| SD-CS-L11-642 |  | Preparation & Submittals of SD of Music & Public Addres System at L11 | 30d | 2015-02-21 | 2015-03-26 | SD-CS-L10-622 SS+6d | 128d | 0d | Shop Drawings Submittals [60 h] |
| SD-CS-L11-652 |  | Review & Approval of SD of Music & Public Addres System at L11 | 30d | 2015-03-04 | 2015-04-07 | SD-CS-L11-642 SS+10d, SD-CS-L11-642 FF+10d | 231d | 169d | Shop Drawings Approval [40 h] |
|  | 16 | **Level 12 Floor - Shop drawings** |  | 2015-02-28 | 2015-04-14 |  |  |  |  |
| SD-CS-L12-662 |  | Preparation & Submittals of SD of Music & Public Addres System at L12 | 30d | 2015-02-28 | 2015-04-02 | SD-CS-L11-642 SS+6d | 128d | 0d | Shop Drawings Submittals [60 h] |
| SD-CS-L12-672 |  | Review & Approval of SD of Music & Public Addres System at L12 | 30d | 2015-03-11 | 2015-04-14 | SD-CS-L12-662 SS+10d, SD-CS-L12-662 FF+10d | 245d | 183d | Shop Drawings Approval [40 h] |
|  | 17 | **Level 13 Floor - Shop drawings** |  | 2015-03-07 | 2015-04-21 |  |  |  |  |
| SD-CS-L13-682 |  | Preparation & Submittals of SD of Music & Public Addres System at L13 | 30d | 2015-03-07 | 2015-04-09 | SD-CS-L12-662 SS+6d | 128d | 0d | Shop Drawings Submittals [60 h] |
| SD-CS-L13-692 |  | Review & Approval of SD of Music & Public Addres System at L13 | 30d | 2015-03-18 | 2015-04-21 | SD-CS-L13-682 SS+10d, SD-CS-L13-682 FF+10d | 240d | 177d | Shop Drawings Approval [40 h] |
|  | 18 | **Level 14 Floor - Shop drawings** |  | 2015-03-14 | 2015-04-28 |  |  |  |  |
| SD-CS-L14-702 |  | Preparation & Submittals of SD of Music & Public Addres System at L14 | 30d | 2015-03-14 | 2015-04-16 | SD-CS-L13-682 SS+6d | 128d | 0d | Shop Drawings Submittals [60 h] |
| SD-CS-L14-712 |  | Review & Approval of SD of Music & Public Addres System at L14 | 30d | 2015-03-25 | 2015-04-28 | SD-CS-L14-702 SS+10d, SD-CS-L14-702 FF+10d | 236d | 171d | Shop Drawings Approval [40 h] |
|  | 19 | **Level 15 Floor - Shop drawings** |  | 2015-03-21 | 2015-05-05 |  |  |  |  |
| SD-CS-L15-722 |  | Preparation & Submittals of SD of Music & Public Addres System at L15 | 30d | 2015-03-21 | 2015-04-23 | SD-CS-L14-702 SS+6d | 128d | 0d | Shop Drawings Submittals [60 h] |
| SD-CS-L15-732 |  | Review & Approval of SD of Music & Public Addres System at L15 | 30d | 2015-04-01 | 2015-05-05 | SD-CS-L15-722 SS+10d, SD-CS-L15-722 FF+10d | 230d | 165d | Shop Drawings Approval [40 h] |
|  | 20 | **Level 16 Floor - Shop drawings** |  | 2015-03-28 | 2015-05-12 |  |  |  |  |
| SD-CS-L16-742 |  | Preparation & Submittals of SD of Music & Public Addres System at L16 | 30d | 2015-03-28 | 2015-04-30 | SD-CS-L15-722 SS+6d | 128d | 0d | Shop Drawings Submittals [60 h] |
| SD-CS-L16-752 |  | Review & Approval of SD of Music & Public Addres System at L16 | 30d | 2015-04-08 | 2015-05-12 | SD-CS-L16-742 SS+10d, SD-CS-L16-742 FF+10d | 224d | 159d | Shop Drawings Approval [40 h] |

| ID | WBS | Activity | Duration | Start | Finish | Predecessors | Total float | Free float | Resources |
| --- | --- | --- | --- | --- | --- | --- | --- | --- | --- |
|  | 21 | **Level 17 Floor - Shop drawings** |  | 2015-04-04 | 2015-05-19 |  |  |  |  |
| SD-CS-L17-1522 |  | Preparation & Submittals of SD of Music & Public Addres System at L17 | 30d | 2015-04-04 | 2015-05-07 | SD-CS-L16-742 SS+6d | 128d | 0d | Shop Drawings Submittals [60 h] |
| SD-CS-L17-1532 |  | Review & Approval of SD of Music & Public Addres System at L17 | 30d | 2015-04-15 | 2015-05-19 | SD-CS-L17-1522 SS+10d, SD-CS-L17-1522 FF+10d | 218d | 153d | Shop Drawings Approval [40 h] |
|  | 22 | **Level 18 Floor - Shop drawings** |  | 2015-04-11 | 2015-05-26 |  |  |  |  |
| SD-CS-L18-782 |  | Preparation & Submittals of SD of Music & Public Addres System at L18 | 30d | 2015-04-11 | 2015-05-14 | SD-CS-L17-1522 SS+6d | 128d | 0d | Shop Drawings Submittals [60 h] |
| SD-CS-L18-792 |  | Review & Approval of SD of Music & Public Addres System at L18 | 30d | 2015-04-22 | 2015-05-26 | SD-CS-L18-782 SS+10d, SD-CS-L18-782 FF+10d | 212d | 147d | Shop Drawings Approval [40 h] |
|  | 23 | **Level 19 Floor - Shop drawings** |  | 2015-04-18 | 2015-06-02 |  |  |  |  |
| SD-CS-L19-802 |  | Preparation & Submittals of SD of Music & Public Addres System at L19 | 30d | 2015-04-18 | 2015-05-21 | SD-CS-L18-782 SS+6d | 128d | 0d | Shop Drawings Submittals [60 h] |
| SD-CS-L19-812 |  | Review & Approval of SD of Music & Public Addres System at L19 | 30d | 2015-04-29 | 2015-06-02 | SD-CS-L19-802 SS+10d, SD-CS-L19-802 FF+10d | 206d | 141d | Shop Drawings Approval [40 h] |
|  | 24 | **Level 20 Floor - Shop drawings** |  | 2015-04-25 | 2015-06-09 |  |  |  |  |
| SD-CS-L20-822 |  | Preparation & Submittals of SD of Music & Public Addres System at L20 | 30d | 2015-04-25 | 2015-05-28 | SD-CS-L19-802 SS+6d | 128d | 0d | Shop Drawings Submittals [60 h] |
| SD-CS-L20-832 |  | Review & Approval of SD of Music & Public Addres System at L20 | 30d | 2015-05-06 | 2015-06-09 | SD-CS-L20-822 SS+10d, SD-CS-L20-822 FF+10d | 220d | 155d | Shop Drawings Approval [40 h] |
|  | 25 | **Level 21 Floor - Shop drawings** |  | 2015-05-02 | 2015-06-16 |  |  |  |  |
| SD-CS-L21-842 |  | Preparation & Submittals of SD of Music & Public Addres System at L21 | 30d | 2015-05-02 | 2015-06-04 | SD-CS-L20-822 SS+6d | 128d | 0d | Shop Drawings Submittals [60 h] |
| SD-CS-L21-852 |  | Review & Approval of SD of Music & Public Addres System at L21 | 30d | 2015-05-13 | 2015-06-16 | SD-CS-L21-842 SS+10d, SD-CS-L21-842 FF+10d | 214d | 149d | Shop Drawings Approval [40 h] |
|  | 26 | **Level 22 Floor - Shop drawings** |  | 2015-05-09 | 2015-06-23 |  |  |  |  |
| SD-CS-L22-862 |  | Preparation & Submittals of SD of Music & Public Addres System at L22 | 30d | 2015-05-09 | 2015-06-11 | SD-CS-L21-842 SS+6d | 128d | 0d | Shop Drawings Submittals [60 h] |
| SD-CS-L22-872 |  | Review & Approval of SD of Music & Public Addres System at L22 | 30d | 2015-05-20 | 2015-06-23 | SD-CS-L22-862 SS+10d, SD-CS-L22-862 FF+10d | 208d | 143d | Shop Drawings Approval [40 h] |
|  | 27 | **Level 23 Floor - Shop drawings** |  | 2015-05-16 | 2015-06-30 |  |  |  |  |
| SD-CS-L23-882 |  | Preparation & Submittals of SD of Music & Public Addres System at L23 | 30d | 2015-05-16 | 2015-06-18 | SD-CS-L22-862 SS+6d | 128d | 0d | Shop Drawings Submittals [60 h] |
| SD-CS-L23-892 |  | Review & Approval of SD of Music & Public Addres System at L23 | 30d | 2015-05-27 | 2015-06-30 | SD-CS-L23-882 SS+10d, SD-CS-L23-882 FF+10d | 202d | 137d | Shop Drawings Approval [40 h] |
|  | 28 | **Level 24 Floor - Shop drawings** |  | 2015-05-23 | 2015-07-07 |  |  |  |  |
| SD-CS-L24-902 |  | Preparation & Submittals of SD of Music & Public Addres System at L24 | 30d | 2015-05-23 | 2015-06-25 | SD-CS-L23-882 SS+6d | 128d | 0d | Shop Drawings Submittals [60 h] |
| SD-CS-L24-912 |  | Review & Approval of SD of Music & Public Addres System at L24 | 30d | 2015-06-03 | 2015-07-07 | SD-CS-L24-902 SS+10d, SD-CS-L24-902 FF+10d | 196d | 131d | Shop Drawings Approval [40 h] |

| ID | WBS | Activity | Duration | Start | Finish | Predecessors | Total float | Free float | Resources |
| --- | --- | --- | --- | --- | --- | --- | --- | --- | --- |
|  | 29 | **Level 25 Floor - Shop drawings** |  | 2015-05-30 | 2015-07-14 |  |  |  |  |
| SD-CS-L25-922 |  | Preparation & Submittals of SD of Music & Public Addres System at L25 | 30d | 2015-05-30 | 2015-07-02 | SD-CS-L24-902 SS+6d | 128d | 0d | Shop Drawings Submittals [60 h] |
| SD-CS-L25-932 |  | Review & Approval of SD of Music & Public Addres System at L25 | 30d | 2015-06-10 | 2015-07-14 | SD-CS-L25-922 SS+10d, SD-CS-L25-922 FF+10d | 190d | 125d | Shop Drawings Approval [40 h] |
|  | 30 | **Level 26 Floor - Shop drawings** |  | 2015-06-06 | 2015-07-23 |  |  |  |  |
| SD-CS-L26-942 |  | Preparation & Submittals of SD of Music & Public Addres System at L26 | 30d | 2015-06-06 | 2015-07-09 | SD-CS-L25-922 SS+6d | 128d | 0d | Shop Drawings Submittals [60 h] |
| SD-CS-L26-952 |  | Review & Approval of SD of Music & Public Addres System at L26 | 30d | 2015-06-17 | 2015-07-23 | SD-CS-L26-942 SS+10d, SD-CS-L26-942 FF+10d | 184d | 119d | Shop Drawings Approval [40 h] |
|  | 31 | **Level 27 Floor - Shop drawings** |  | 2015-06-13 | 2015-07-30 |  |  |  |  |
| SD-CS-L27-962 |  | Preparation & Submittals of SD of Music & Public Addres System at L27 | 30d | 2015-06-13 | 2015-07-19 | SD-CS-L26-942 SS+6d | 128d | 0d | Shop Drawings Submittals [60 h] |
| SD-CS-L27-972 |  | Review & Approval of SD of Music & Public Addres System at L27 | 30d | 2015-06-24 | 2015-07-30 | SD-CS-L27-962 SS+10d, SD-CS-L27-962 FF+10d | 178d | 113d | Shop Drawings Approval [40 h] |
|  | 32 | **Level 28 Floor - Shop drawings** |  | 2015-06-20 | 2015-08-06 |  |  |  |  |
| SD-CS-L28-982 |  | Preparation & Submittals of SD of Music & Public Addres System at L28 | 30d | 2015-06-20 | 2015-07-26 | SD-CS-L27-962 SS+6d | 128d | 0d | Shop Drawings Submittals [60 h] |
| SD-CS-L28-992 |  | Review & Approval of SD of Music & Public Addres System at L28 | 30d | 2015-07-01 | 2015-08-06 | SD-CS-L28-982 SS+10d, SD-CS-L28-982 FF+10d | 192d | 127d | Shop Drawings Approval [40 h] |
|  | 33 | **Level 29 Floor - Shop drawings** |  | 2015-06-27 | 2015-08-13 |  |  |  |  |
| SD-CS-L29-1002 |  | Preparation & Submittals of SD of Music & Public Addres System at L29 | 30d | 2015-06-27 | 2015-08-02 | SD-CS-L28-982 SS+6d | 128d | 0d | Shop Drawings Submittals [60 h] |
| SD-CS-L29-1012 |  | Review & Approval of SD of Music & Public Addres System at L29 | 30d | 2015-07-08 | 2015-08-13 | SD-CS-L29-1002 SS+10d, SD-CS-L29-1002 FF+10d | 186d | 121d | Shop Drawings Approval [40 h] |
|  | 34 | **Level 30 Floor - Shop drawings** |  | 2015-07-04 | 2015-08-20 |  |  |  |  |
| SD-CS-L30-1022 |  | Preparation & Submittals of SD of Music & Public Addres System at L30 | 30d | 2015-07-04 | 2015-08-09 | SD-CS-L29-1002 SS+6d | 128d | 0d | Shop Drawings Submittals [60 h] |
| SD-CS-L30-1032 |  | Review & Approval of SD of Music & Public Addres System at L30 | 30d | 2015-07-18 | 2015-08-20 | SD-CS-L30-1022 SS+10d, SD-CS-L30-1022 FF+10d | 180d | 115d | Shop Drawings Approval [40 h] |
|  | 35 | **Level 31 Floor - Shop drawings** |  | 2015-07-11 | 2015-08-27 |  |  |  |  |
| SD-CS-L31-1042 |  | Preparation & Submittals of SD of Music & Public Addres System at L31 | 30d | 2015-07-11 | 2015-08-16 | SD-CS-L30-1022 SS+6d | 128d | 0d | Shop Drawings Submittals [60 h] |
| SD-CS-L31-1052 |  | Review & Approval of SD of Music & Public Addres System at L31 | 30d | 2015-07-25 | 2015-08-27 | SD-CS-L31-1042 SS+10d, SD-CS-L31-1042 FF+10d | 174d | 109d | Shop Drawings Approval [40 h] |
|  | 36 | **Level 32 Floor - Shop drawings** |  | 2015-07-20 | 2015-09-03 |  |  |  |  |
| SD-CS-L32-1062 |  | Preparation & Submittals of SD of Music & Public Addres System at L32 | 30d | 2015-07-20 | 2015-08-23 | SD-CS-L31-1042 SS+6d | 128d | 0d | Shop Drawings Submittals [60 h] |
| SD-CS-L32-1072 |  | Review & Approval of SD of Music & Public Addres System at L32 | 30d | 2015-08-01 | 2015-09-03 | SD-CS-L32-1062 SS+10d, SD-CS-L32-1062 FF+10d | 168d | 103d | Shop Drawings Approval [40 h] |

| ID | WBS | Activity | Duration | Start | Finish | Predecessors | Total float | Free float | Resources |
| --- | --- | --- | --- | --- | --- | --- | --- | --- | --- |
|  | 37 | **Level 33 Floor - Shop drawings** |  | 2015-07-27 | 2015-09-10 |  |  |  |  |
| SD-CS-L33-1082 |  | Preparation & Submittals of SD of Music & Public Addres System at L33 | 30d | 2015-07-27 | 2015-08-30 | SD-CS-L32-1062 SS+6d | 128d | 0d | Shop Drawings Submittals [60 h] |
| SD-CS-L33-1092 |  | Review & Approval of SD of Music & Public Addres System at L33 | 30d | 2015-08-08 | 2015-09-10 | SD-CS-L33-1082 SS+10d, SD-CS-L33-1082 FF+10d | 162d | 97d | Shop Drawings Approval [40 h] |
|  | 38 | **Level 34 Floor - Shop drawings** |  | 2015-08-03 | 2015-09-17 |  |  |  |  |
| SD-CS-L34-1102 |  | Preparation & Submittals of SD of Music & Public Addres System at L34 | 30d | 2015-08-03 | 2015-09-06 | SD-CS-L33-1082 SS+6d | 128d | 0d | Shop Drawings Submittals [60 h] |
| SD-CS-L34-1112 |  | Review & Approval of SD of Music & Public Addres System at L34 | 30d | 2015-08-15 | 2015-09-17 | SD-CS-L34-1102 SS+10d, SD-CS-L34-1102 FF+10d | 161d | 95d | Shop Drawings Approval [40 h] |
|  | 39 | **Level 35 Floor - Shop drawings** |  | 2015-08-10 | 2015-09-28 |  |  |  |  |
| SD-CS-L35-1122 |  | Preparation & Submittals of SD of Music & Public Addres System at L35 | 30d | 2015-08-10 | 2015-09-13 | SD-CS-L34-1102 SS+6d | 128d | 0d | Shop Drawings Submittals [60 h] |
| SD-CS-L35-1132 |  | Review & Approval of SD of Music & Public Addres System at L35 | 30d | 2015-08-22 | 2015-09-28 | SD-CS-L35-1122 SS+10d, SD-CS-L35-1122 FF+10d | 155d | 103d | Shop Drawings Approval [40 h] |
|  | 40 | **Level 36 Floor - Shop drawings** |  | 2015-08-17 | 2015-10-05 |  |  |  |  |
| SD-CS-L36-1142 |  | Preparation & Submittals of SD of Music & Public Addres System at L36 | 30d | 2015-08-17 | 2015-09-23 | SD-CS-L35-1122 SS+6d | 128d | 0d | Shop Drawings Submittals [60 h] |
| SD-CS-L36-1152 |  | Review & Approval of SD of Music & Public Addres System at L36 | 30d | 2015-08-29 | 2015-10-05 | SD-CS-L36-1142 SS+10d, SD-CS-L36-1142 FF+10d | 149d | 97d | Shop Drawings Approval [40 h] |
|  | 41 | **Level 37 Floor - Shop drawings** |  | 2015-08-24 | 2015-10-12 |  |  |  |  |
| SD-CS-L37-1162 |  | Preparation & Submittals of SD of Music & Public Addres System at L37 | 30d | 2015-08-24 | 2015-09-30 | SD-CS-L36-1142 SS+6d | 128d | 0d | Shop Drawings Submittals [60 h] |
| SD-CS-L37-1172 |  | Review & Approval of SD of Music & Public Addres System at L37 | 30d | 2015-09-05 | 2015-10-12 | SD-CS-L37-1162 SS+10d, SD-CS-L37-1162 FF+10d | 163d | 111d | Shop Drawings Approval [40 h] |
|  | 42 | **Level 38 Floor - Shop drawings** |  | 2015-08-31 | 2015-10-19 |  |  |  |  |
| SD-CS-L38-1182 |  | Preparation & Submittals of SD of Music & Public Addres System at L38 | 30d | 2015-08-31 | 2015-10-07 | SD-CS-L37-1162 SS+6d | 128d | 0d | Shop Drawings Submittals [60 h] |
| SD-CS-L38-1192 |  | Review & Approval of SD of Music & Public Addres System at L38 | 30d | 2015-09-12 | 2015-10-19 | SD-CS-L38-1182 SS+10d, SD-CS-L38-1182 FF+10d | 166d | 105d | Shop Drawings Approval [40 h] |
|  | 43 | **Level 39 Floor - Shop drawings** |  | 2015-09-07 | 2015-10-26 |  |  |  |  |
| SD-CS-L39-1202 |  | Preparation & Submittals of SD of Music & Public Addres System at L39 | 30d | 2015-09-07 | 2015-10-14 | SD-CS-L38-1182 SS+6d | 128d | 0d | Shop Drawings Submittals [60 h] |
| SD-CS-L39-1212 |  | Review & Approval of SD of Music & Public Addres System at L39 | 30d | 2015-09-19 | 2015-10-26 | SD-CS-L39-1202 SS+10d, SD-CS-L39-1202 FF+10d | 161d | 103d | Shop Drawings Approval [40 h] |
|  | 44 | **Level 40 Floor - Shop drawings** |  | 2015-09-14 | 2015-11-02 |  |  |  |  |
| SD-CS-L40-1222 |  | Preparation & Submittals of SD of Music & Public Addres System at L40 | 30d | 2015-09-14 | 2015-10-21 | SD-CS-L39-1202 SS+6d | 128d | 0d | Shop Drawings Submittals [60 h] |
| SD-CS-L40-1232 |  | Review & Approval of SD of Music & Public Addres System at L40 | 30d | 2015-09-29 | 2015-11-02 | SD-CS-L40-1222 SS+10d, SD-CS-L40-1222 FF+10d | 155d | 97d | Shop Drawings Approval [40 h] |

| ID | WBS | Activity | Duration | Start | Finish | Predecessors | Total float | Free float | Resources |
| --- | --- | --- | --- | --- | --- | --- | --- | --- | --- |
|  | 45 | **Level 41 Floor - Shop drawings** |  | 2015-09-24 | 2015-11-09 |  |  |  |  |
| SD-CS-L41-1242 |  | Preparation & Submittals of SD of Music & Public Addres System at L41 | 30d | 2015-09-24 | 2015-10-28 | SD-CS-L40-1222 SS+6d | 128d | 0d | Shop Drawings Submittals [60 h] |
| SD-CS-L41-1252 |  | Review & Approval of SD of Music & Public Addres System at L41 | 30d | 2015-10-06 | 2015-11-09 | SD-CS-L41-1242 SS+10d, SD-CS-L41-1242 FF+10d | 149d | 95d | Shop Drawings Approval [40 h] |
|  | 46 | **Level 42 Floor - Shop drawings** |  | 2015-10-01 | 2015-11-16 |  |  |  |  |
| SD-CS-L42-1262 |  | Preparation & Submittals of SD of Music & Public Addres System at L42 | 30d | 2015-10-01 | 2015-11-04 | SD-CS-L41-1242 SS+6d | 128d | 0d | Shop Drawings Submittals [60 h] |
| SD-CS-L42-1272 |  | Review & Approval of SD of Music & Public Addres System at L42 | 30d | 2015-10-13 | 2015-11-16 | SD-CS-L42-1262 SS+10d, SD-CS-L42-1262 FF+10d | 143d | 103d | Shop Drawings Approval [40 h] |
|  | 47 | **Level 43 Floor - Shop drawings** |  | 2015-10-08 | 2015-11-23 |  |  |  |  |
| SD-CS-L43-1282 |  | Preparation & Submittals of SD of Music & Public Addres System at L43 | 30d | 2015-10-08 | 2015-11-11 | SD-CS-L42-1262 SS+6d | 128d | 0d | Shop Drawings Submittals [60 h] |
| SD-CS-L43-1292 |  | Review & Approval of SD of Music & Public Addres System at L43 | 30d | 2015-10-20 | 2015-11-23 | SD-CS-L43-1282 SS+10d, SD-CS-L43-1282 FF+10d | 137d | 97d | Shop Drawings Approval [40 h] |
|  | 48 | **Level 44 Floor - Shop drawings** |  | 2015-10-15 | 2015-11-30 |  |  |  |  |
| SD-CS-L44-1302 |  | Preparation & Submittals of SD of Music & Public Addres System at L44 | 30d | 2015-10-15 | 2015-11-18 | SD-CS-L43-1282 SS+6d | 128d | 0d | Shop Drawings Submittals [60 h] |
| SD-CS-L44-1312 |  | Review & Approval of SD of Music & Public Addres System at L44 | 30d | 2015-10-27 | 2015-11-30 | SD-CS-L44-1302 SS+10d, SD-CS-L44-1302 FF+10d | 151d | 111d | Shop Drawings Approval [40 h] |
|  | 49 | **Level 45 Floor - Shop drawings** |  | 2015-10-22 | 2015-12-07 |  |  |  |  |
| SD-CS-L45-1322 |  | Preparation & Submittals of SD of Music & Public Addres System at L45 | 30d | 2015-10-22 | 2015-11-25 | SD-CS-L44-1302 SS+6d | 128d | 0d | Shop Drawings Submittals [60 h] |
| SD-CS-L45-1332 |  | Review & Approval of SD of Music & Public Addres System at L45 | 30d | 2015-11-03 | 2015-12-07 | SD-CS-L45-1322 SS+10d, SD-CS-L45-1322 FF+10d | 145d | 105d | Shop Drawings Approval [40 h] |
|  | 50 | **Level 46 Floor - Shop drawings** |  | 2015-10-29 | 2015-12-14 |  |  |  |  |
| SD-CS-L46-1342 |  | Preparation & Submittals of SD of Music & Public Addres System at L46 | 30d | 2015-10-29 | 2015-12-02 | SD-CS-L45-1322 SS+6d | 128d | 0d | Shop Drawings Submittals [60 h] |
| SD-CS-L46-1352 |  | Review & Approval of SD of Music & Public Addres System at L46 | 30d | 2015-11-10 | 2015-12-14 | SD-CS-L46-1342 SS+10d, SD-CS-L46-1342 FF+10d | 139d | 99d | Shop Drawings Approval [40 h] |
|  | 53 | **Level 47 Floor - Shop drawings** |  | 2015-11-05 | 2015-12-22 |  |  |  |  |
| SD-CS-L47-1362 |  | Preparation & Submittals of SD of Music & Public Addres System at L47 | 30d | 2015-11-05 | 2015-12-09 | SD-CS-L46-1342 SS+6d | 128d | 0d | Shop Drawings Submittals [60 h] |
| SD-CS-L47-1372 |  | Review & Approval of SD of Music & Public Addres System at L47 | 30d | 2015-11-17 | 2015-12-22 | SD-CS-L47-1362 SS+10d, SD-CS-L47-1362 FF+10d | 133d | 95d | Shop Drawings Approval [40 h] |
|  | 51 | **Level 48 Floor - Shop drawings** |  | 2015-11-12 | 2015-12-29 |  |  |  |  |
| SD-CS-L48-1382 |  | Preparation & Submittals of SD of Music & Public Addres System at L48 | 30d | 2015-11-12 | 2015-12-16 | SD-CS-L47-1362 SS+6d | 128d | 0d | Shop Drawings Submittals [60 h] |
| SD-CS-L48-1392 |  | Review & Approval of SD of Music & Public Addres System at L48 | 30d | 2015-11-24 | 2015-12-29 | SD-CS-L48-1382 SS+10d, SD-CS-L48-1382 FF+10d | 133d | 90d | Shop Drawings Approval [40 h] |

| ID | WBS | Activity | Duration | Start | Finish | Predecessors | Total float | Free float | Resources |
| --- | --- | --- | --- | --- | --- | --- | --- | --- | --- |
|  | 52 | **Level 49 Floor - Shop drawings** |  | 2015-11-19 | 2016-01-05 |  |  |  |  |
| SD-CS-L49-1402 |  | Preparation & Submittals of SD of Music & Public Addres System at L49 | 30d | 2015-11-19 | 2015-12-24 | SD-CS-L48-1382 SS+6d | 128d | 0d | Shop Drawings Submittals [60 h] |
| SD-CS-L49-1412 |  | Review & Approval of SD of Music & Public Addres System at L49 | 30d | 2015-12-01 | 2016-01-05 | SD-CS-L49-1402 SS+10d, SD-CS-L49-1402 FF+10d | 133d | 96d | Shop Drawings Approval [40 h] |
|  | 54 | **Level 50 Floor - Shop drawings** |  | 2015-11-26 | 2016-01-12 |  |  |  |  |
| SD-CS-L50-1422 |  | Preparation & Submittals of SD of Music & Public Addres System at L50 | 30d | 2015-11-26 | 2015-12-31 | SD-CS-L49-1402 SS+6d | 128d | 0d | Shop Drawings Submittals [60 h] |
| SD-CS-L50-1432 |  | Review & Approval of SD of Music & Public Addres System at L50 | 30d | 2015-12-08 | 2016-01-12 | SD-CS-L50-1422 SS+10d, SD-CS-L50-1422 FF+10d | 130d | 96d | Shop Drawings Approval [40 h] |
|  | 55 | **Level 51 Floor - Shop drawings** |  | 2015-12-03 | 2016-01-19 |  |  |  |  |
| SD-CS-L51-2222 |  | Preparation & Submittals of SD of Music & Public Addres System at L51 | 30d | 2015-12-03 | 2016-01-07 | SD-CS-L50-1422 SS+6d | 128d | 0d | Shop Drawings Submittals [60 h] |
| SD-CS-L51-2232 |  | Review & Approval of SD of Music & Public Addres System at L51 | 30d | 2015-12-15 | 2016-01-19 | SD-CS-L51-2222 SS+10d, SD-CS-L51-2222 FF+10d | 128d | 90d | Shop Drawings Approval [40 h] |
|  | 3 | **IP CCTV & Access Control System** |  | 2014-11-24 | 2016-01-31 |  |  |  |  |
|  | R | **Basement 3 Floor level - Shop drawings** |  | 2014-11-24 | 2015-01-10 |  |  |  |  |
| SD-CS-B3-762 |  | Preparation & Submittals of SD of IP CCTV & Accesss Control System at B3 | 30d | 2014-11-24 | 2014-12-29 | PQ-CS-C-492 | 116d | 0d | Shop Drawings Submittals [60 h] |
| SD-CS-B3-772 |  | Review & Approval of SD of IP CCTV & Accesss Control System at B3 | 30d | 2014-12-06 | 2015-01-10 | SD-CS-B3-762 SS+10d, SD-CS-B3-762 FF+10d | 415d | 281d | Shop Drawings Approval [40 h] |
|  | 1 | **Basement 2 Floor level - Shop drawings** |  | 2014-12-01 | 2015-01-17 |  |  |  |  |
| SD-CS-B3-742 |  | Preparation & Submittals of SD of IP CCTV & Accesss Control System at B2 | 30d | 2014-12-01 | 2015-01-05 | SD-CS-B3-762 SS+6d | 116d | 0d | Shop Drawings Submittals [60 h] |
| SD-CS-B3-752 |  | Review & Approval of SD of IP CCTV & Accesss Control System at B2 | 30d | 2014-12-13 | 2015-01-17 | SD-CS-B3-742 SS+10d, SD-CS-B3-742 FF+10d | 409d | 275d | Shop Drawings Approval [40 h] |
|  | 2 | **Basement 1 Floor level - Shop drawings** |  | 2014-12-08 | 2015-01-24 |  |  |  |  |
| SD-CS-B2-462 |  | Preparation & Submittals of SD of IP CCTV & Accesss Control System at B1 | 30d | 2014-12-08 | 2015-01-12 | SD-CS-B3-742 SS+6d | 116d | 0d | Shop Drawings Submittals [60 h] |
| SD-CS-B2-472 |  | Review & Approval of SD of IP CCTV & Accesss Control System at B1 | 30d | 2014-12-21 | 2015-01-24 | SD-CS-B2-462 SS+10d, SD-CS-B2-462 FF+10d | 403d | 269d | Shop Drawings Approval [40 h] |
|  | 3 | **Ground Floor level - Shop drawings** |  | 2014-12-15 | 2015-01-31 |  |  |  |  |
| SD-CS-B1-462 |  | Preparation & Submittals of SD of IP CCTV & Accesss Control System at GF | 30d | 2014-12-15 | 2015-01-19 | SD-CS-B2-462 SS+6d, G-CD-003 | 116d | 0d | Shop Drawings Submittals [60 h] |
| SD-CS-B1-472 |  | Review & Approval of SD of IP CCTV & Accesss Control System at GF | 30d | 2014-12-28 | 2015-01-31 | SD-CS-B1-462 SS+10d, SD-CS-B1-462 FF+10d | 167d | 45d | Shop Drawings Approval [40 h] |
|  | 4 | **Mezzanine Floor level - Shop drawings** |  | 2014-12-23 | 2015-02-07 |  |  |  |  |
| SD-CS-GF-462 |  | Preparation & Submittals of SD of IP CCTV & Accesss Control System at ML | 30d | 2014-12-23 | 2015-01-26 | SD-CS-B1-462 SS+6d | 116d | 0d | Shop Drawings Submittals [60 h] |
| SD-CS-GF-472 |  | Review & Approval of SD of IP CCTV & Accesss Control System at ML | 30d | 2015-01-04 | 2015-02-07 | SD-CS-GF-462 SS+10d, SD-CS-GF-462 FF+10d | 181d | 59d | Shop Drawings Approval [40 h] |

| ID | WBS | Activity | Duration | Start | Finish | Predecessors | Total float | Free float | Resources |
| --- | --- | --- | --- | --- | --- | --- | --- | --- | --- |
|  | 5 | **Level 1 Floor - Shop drawings** |  | 2014-12-30 | 2015-02-15 |  |  |  |  |
| SD-CS-L1-482 |  | Preparation & Submittals of SD of IP CCTV & Accesss Control System at L1 | 30d | 2014-12-30 | 2015-02-02 | SD-CS-GF-462 SS+6d | 195d | 0d | Shop Drawings Submittals [60 h] |
| SD-CS-L1-492 |  | Review & Approval of SD of IP CCTV & Accesss Control System at L1 | 30d | 2015-01-11 | 2015-02-15 | SD-CS-L1-482 SS+10d, SD-CS-L1-482 FF+10d | 195d | 73d | Shop Drawings Approval [40 h] |
|  | 6 | **Level 2 Floor - Shop drawings** |  | 2014-12-30 | 2015-02-15 |  |  |  |  |
| SD-CS-L2-502 |  | Preparation & Submittals of SD of IP CCTV & Accesss Control System at L2 | 30d | 2014-12-30 | 2015-02-02 | SD-CS-GF-462 SS+6d | 116d | 0d | Shop Drawings Submittals [60 h] |
| SD-CS-L2-512 |  | Review & Approval of SD of IP CCTV & Accesss Control System at L2 | 30d | 2015-01-11 | 2015-02-15 | SD-CS-L2-502 SS+10d, SD-CS-L2-502 FF+10d | 235d | 113d | Shop Drawings Approval [40 h] |
|  | 7 | **Level 3 Floor - Shop drawings** |  | 2015-01-06 | 2015-02-22 |  |  |  |  |
| SD-CS-L3-522 |  | Preparation & Submittals of SD of IP CCTV & Accesss Control System at L3 | 30d | 2015-01-06 | 2015-02-09 | SD-CS-L2-502 SS+6d | 116d | 0d | Shop Drawings Submittals [60 h] |
| SD-CS-L3-532 |  | Review & Approval of SD of IP CCTV & Accesss Control System at L3 | 30d | 2015-01-18 | 2015-02-22 | SD-CS-L3-522 SS+10d, SD-CS-L3-522 FF+10d | 249d | 127d | Shop Drawings Approval [40 h] |
|  | 8 | **Level 4 Floor - Shop drawings** |  | 2015-01-13 | 2015-03-01 |  |  |  |  |
| SD-CS-L4-1542 |  | Preparation & Submittals of SD of IP CCTV & Accesss Control System at L4 | 30d | 2015-01-13 | 2015-02-17 | SD-CS-L3-522 SS+6d | 116d | 0d | Shop Drawings Submittals [60 h] |
| SD-CS-L4-1552 |  | Review & Approval of SD of IP CCTV & Accesss Control System at L4 | 30d | 2015-01-25 | 2015-03-01 | SD-CS-L4-1542 SS+10d, SD-CS-L4-1542 FF+10d | 243d | 121d | Shop Drawings Approval [40 h] |
|  | 9 | **Level 5 Floor - Shop drawings** |  | 2015-01-20 | 2015-03-08 |  |  |  |  |
| SD-CS-L5-562 |  | Preparation & Submittals of SD of IP CCTV & Accesss Control System at L5 | 30d | 2015-01-20 | 2015-02-24 | SD-CS-L4-1542 SS+6d | 116d | 0d | Shop Drawings Submittals [60 h] |
| SD-CS-L5-572 |  | Review & Approval of SD of IP CCTV & Accesss Control System at L5 | 30d | 2015-02-01 | 2015-03-08 | SD-CS-L5-562 SS+10d, SD-CS-L5-562 FF+10d | 252d | 115d | Shop Drawings Approval [40 h] |
|  | 10 | **Level 6 Floor - Shop drawings** |  | 2015-01-27 | 2015-03-15 |  |  |  |  |
| SD-CS-L6-582 |  | Preparation & Submittals of SD of IP CCTV & Accesss Control System at L6 | 30d | 2015-01-27 | 2015-03-03 | SD-CS-L5-562 SS+6d | 116d | 0d | Shop Drawings Submittals [60 h] |
| SD-CS-L6-592 |  | Review & Approval of SD of IP CCTV & Accesss Control System at L6 | 30d | 2015-02-08 | 2015-03-15 | SD-CS-L6-582 SS+10d, SD-CS-L6-582 FF+10d | 246d | 109d | Shop Drawings Approval [40 h] |
|  | 11 | **Level 7 Floor - Shop drawings** |  | 2015-02-03 | 2015-03-22 |  |  |  |  |
| SD-CS-L7-602 |  | Preparation & Submittals of SD of IP CCTV & Accesss Control System at L7 | 30d | 2015-02-03 | 2015-03-10 | SD-CS-L6-582 SS+6d | 116d | 0d | Shop Drawings Submittals [60 h] |
| SD-CS-L7-612 |  | Review & Approval of SD of IP CCTV & Accesss Control System at L7 | 30d | 2015-02-16 | 2015-03-22 | SD-CS-L7-602 SS+10d, SD-CS-L7-602 FF+10d | 240d | 103d | Shop Drawings Approval [40 h] |
|  | 12 | **Level 8 Floor - Shop drawings** |  | 2015-02-11 | 2015-03-29 |  |  |  |  |
| SD-CS-L8-622 |  | Preparation & Submittals of SD of IP CCTV & Accesss Control System at L8 | 30d | 2015-02-11 | 2015-03-17 | SD-CS-L7-602 SS+6d | 116d | 0d | Shop Drawings Submittals [60 h] |
| SD-CS-L8-632 |  | Review & Approval of SD of IP CCTV & Accesss Control System at L8 | 30d | 2015-02-23 | 2015-03-29 | SD-CS-L8-622 SS+10d, SD-CS-L8-622 FF+10d | 234d | 97d | Shop Drawings Approval [40 h] |

| ID | WBS | Activity | Duration | Start | Finish | Predecessors | Total float | Free float | Resources |
| --- | --- | --- | --- | --- | --- | --- | --- | --- | --- |
|  | 13 | **Level 9 Floor - Shop drawings** |  | 2015-02-18 | 2015-04-05 |  |  |  |  |
| SD-CS-L9-642 |  | Preparation & Submittals of SD of IP CCTV & Accesss Control System at L9 | 30d | 2015-02-18 | 2015-03-24 | SD-CS-L8-622 SS+6d | 116d | 0d | Shop Drawings Submittals [60 h] |
| SD-CS-L9-652 |  | Review & Approval of SD of IP CCTV & Accesss Control System at L9 | 30d | 2015-03-02 | 2015-04-05 | SD-CS-L9-642 SS+10d, SD-CS-L9-642 FF+10d | 248d | 111d | Shop Drawings Approval [40 h] |
|  | 14 | **Level 10 Floor - Shop drawings** |  | 2015-02-25 | 2015-04-12 |  |  |  |  |
| SD-CS-L10-662 |  | Preparation & Submittals of SD of IP CCTV & Accesss Control System at L10 | 30d | 2015-02-25 | 2015-03-31 | SD-CS-L9-642 SS+6d | 116d | 0d | Shop Drawings Submittals [60 h] |
| SD-CS-L10-672 |  | Review & Approval of SD of IP CCTV & Accesss Control System at L10 | 30d | 2015-03-09 | 2015-04-12 | SD-CS-L10-662 SS+10d, SD-CS-L10-662 FF+10d | 242d | 105d | Shop Drawings Approval [40 h] |
|  | 15 | **Level 11 Floor - Shop drawings** |  | 2015-03-04 | 2015-04-19 |  |  |  |  |
| SD-CS-L11-682 |  | Preparation & Submittals of SD of IP CCTV & Accesss Control System at L11 | 30d | 2015-03-04 | 2015-04-07 | SD-CS-L10-662 SS+6d | 116d | 0d | Shop Drawings Submittals [60 h] |
| SD-CS-L11-692 |  | Review & Approval of SD of IP CCTV & Accesss Control System at L11 | 30d | 2015-03-16 | 2015-04-19 | SD-CS-L11-682 SS+10d, SD-CS-L11-682 FF+10d | 236d | 99d | Shop Drawings Approval [40 h] |
|  | 16 | **Level 12 Floor - Shop drawings** |  | 2015-03-11 | 2015-04-26 |  |  |  |  |
| SD-CS-L12-702 |  | Preparation & Submittals of SD of IP CCTV & Accesss Control System at L12 | 30d | 2015-03-11 | 2015-04-14 | SD-CS-L11-682 SS+6d | 116d | 0d | Shop Drawings Submittals [60 h] |
| SD-CS-L12-712 |  | Review & Approval of SD of IP CCTV & Accesss Control System at L12 | 30d | 2015-03-23 | 2015-04-26 | SD-CS-L12-702 SS+10d, SD-CS-L12-702 FF+10d | 230d | 93d | Shop Drawings Approval [40 h] |
|  | 17 | **Level 13 Floor - Shop drawings** |  | 2015-03-18 | 2015-05-03 |  |  |  |  |
| SD-CS-L13-722 |  | Preparation & Submittals of SD of IP CCTV & Accesss Control System at L13 | 30d | 2015-03-18 | 2015-04-21 | SD-CS-L12-702 SS+6d | 116d | 0d | Shop Drawings Submittals [60 h] |
| SD-CS-L13-732 |  | Review & Approval of SD of IP CCTV & Accesss Control System at L13 | 30d | 2015-03-30 | 2015-05-03 | SD-CS-L13-722 SS+10d, SD-CS-L13-722 FF+10d | 224d | 87d | Shop Drawings Approval [40 h] |
|  | 18 | **Level 14 Floor - Shop drawings** |  | 2015-03-25 | 2015-05-10 |  |  |  |  |
| SD-CS-L14-742 |  | Preparation & Submittals of SD of IP CCTV & Accesss Control System at L14 | 30d | 2015-03-25 | 2015-04-28 | SD-CS-L13-722 SS+6d | 116d | 0d | Shop Drawings Submittals [60 h] |
| SD-CS-L14-752 |  | Review & Approval of SD of IP CCTV & Accesss Control System at L14 | 30d | 2015-04-06 | 2015-05-10 | SD-CS-L14-742 SS+10d, SD-CS-L14-742 FF+10d | 218d | 81d | Shop Drawings Approval [40 h] |
|  | 19 | **Level 15 Floor - Shop drawings** |  | 2015-04-01 | 2015-05-17 |  |  |  |  |
| SD-CS-L15-762 |  | Preparation & Submittals of SD of IP CCTV & Accesss Control System at L15 | 30d | 2015-04-01 | 2015-05-05 | SD-CS-L14-742 SS+6d | 116d | 0d | Shop Drawings Submittals [60 h] |
| SD-CS-L15-772 |  | Review & Approval of SD of IP CCTV & Accesss Control System at L15 | 30d | 2015-04-13 | 2015-05-17 | SD-CS-L15-762 SS+10d, SD-CS-L15-762 FF+10d | 212d | 81d | Shop Drawings Approval [40 h] |
|  | 20 | **Level 16 Floor - Shop drawings** |  | 2015-04-08 | 2015-05-24 |  |  |  |  |
| SD-CS-L16-782 |  | Preparation & Submittals of SD of IP CCTV & Accesss Control System at L16 | 30d | 2015-04-08 | 2015-05-12 | SD-CS-L15-762 SS+6d | 116d | 0d | Shop Drawings Submittals [60 h] |
| SD-CS-L16-792 |  | Review & Approval of SD of IP CCTV & Accesss Control System at L16 | 30d | 2015-04-20 | 2015-05-24 | SD-CS-L16-782 SS+10d, SD-CS-L16-782 FF+10d | 214d | 89d | Shop Drawings Approval [40 h] |

| ID | WBS | Activity | Duration | Start | Finish | Predecessors | Total float | Free float | Resources |
| --- | --- | --- | --- | --- | --- | --- | --- | --- | --- |
|  | 21 | **Level 17 Floor - Shop drawings** |  | 2015-04-15 | 2015-05-31 |  |  |  |  |
| SD-CS-L17-1562 |  | Preparation & Submittals of SD of IP CCTV & Accesss Control System at L17 | 30d | 2015-04-15 | 2015-05-19 | SD-CS-L16-782 SS+6d | 116d | 0d | Shop Drawings Submittals [60 h] |
| SD-CS-L17-1572 |  | Review & Approval of SD of IP CCTV & Accesss Control System at L17 | 30d | 2015-04-27 | 2015-05-31 | SD-CS-L17-1562 SS+10d, SD-CS-L17-1562 FF+10d | 220d | 89d | Shop Drawings Approval [40 h] |
|  | 22 | **Level 18 Floor - Shop drawings** |  | 2015-04-22 | 2015-06-07 |  |  |  |  |
| SD-CS-L18-822 |  | Preparation & Submittals of SD of IP CCTV & Accesss Control System at L18 | 30d | 2015-04-22 | 2015-05-26 | SD-CS-L17-1562 SS+6d | 116d | 0d | Shop Drawings Submittals [60 h] |
| SD-CS-L18-832 |  | Review & Approval of SD of IP CCTV & Accesss Control System at L18 | 30d | 2015-05-04 | 2015-06-07 | SD-CS-L18-822 SS+10d, SD-CS-L18-822 FF+10d | 214d | 83d | Shop Drawings Approval [40 h] |
|  | 23 | **Level 19 Floor - Shop drawings** |  | 2015-04-29 | 2015-06-14 |  |  |  |  |
| SD-CS-L19-842 |  | Preparation & Submittals of SD of IP CCTV & Accesss Control System at L19 | 30d | 2015-04-29 | 2015-06-02 | SD-CS-L18-822 SS+6d | 116d | 0d | Shop Drawings Submittals [60 h] |
| SD-CS-L19-852 |  | Review & Approval of SD of IP CCTV & Accesss Control System at L19 | 30d | 2015-05-11 | 2015-06-14 | SD-CS-L19-842 SS+10d, SD-CS-L19-842 FF+10d | 208d | 80d | Shop Drawings Approval [40 h] |
|  | 24 | **Level 20 Floor - Shop drawings** |  | 2015-05-06 | 2015-06-21 |  |  |  |  |
| SD-CS-L20-862 |  | Preparation & Submittals of SD of IP CCTV & Accesss Control System at L20 | 30d | 2015-05-06 | 2015-06-09 | SD-CS-L19-842 SS+6d | 116d | 0d | Shop Drawings Submittals [60 h] |
| SD-CS-L20-872 |  | Review & Approval of SD of IP CCTV & Accesss Control System at L20 | 30d | 2015-05-18 | 2015-06-21 | SD-CS-L20-862 SS+10d, SD-CS-L20-862 FF+10d | 202d | 81d | Shop Drawings Approval [40 h] |
|  | 25 | **Level 21 Floor - Shop drawings** |  | 2015-05-13 | 2015-06-24 |  |  |  |  |
| SD-CS-L21-882 |  | Preparation & Submittals of SD of IP CCTV & Accesss Control System at L21 | 30d | 2015-05-13 | 2015-06-16 | SD-CS-L20-862 SS+6d | 116d | 0d | Shop Drawings Submittals [60 h] |
| SD-CS-L21-892 |  | Review & Approval of SD of IP CCTV & Accesss Control System at L21 | 30d | 2015-05-21 | 2015-06-24 | SD-CS-L21-882 SS+7d, SD-CS-L21-882 FF+7d | 199d | 92d | Shop Drawings Approval [40 h] |
|  | 26 | **Level 22 Floor - Shop drawings** |  | 2015-05-20 | 2015-07-01 |  |  |  |  |
| SD-CS-L22-902 |  | Preparation & Submittals of SD of IP CCTV & Accesss Control System at L22 | 30d | 2015-05-20 | 2015-06-23 | SD-CS-L21-882 SS+6d | 116d | 0d | Shop Drawings Submittals [60 h] |
| SD-CS-L22-912 |  | Review & Approval of SD of IP CCTV & Accesss Control System at L22 | 30d | 2015-05-28 | 2015-07-01 | SD-CS-L22-902 SS+7d, SD-CS-L22-902 FF+7d | 193d | 86d | Shop Drawings Approval [40 h] |
|  | 27 | **Level 23 Floor - Shop drawings** |  | 2015-05-27 | 2015-07-08 |  |  |  |  |
| SD-CS-L23-922 |  | Preparation & Submittals of SD of IP CCTV & Accesss Control System at L23 | 30d | 2015-05-27 | 2015-06-30 | SD-CS-L22-902 SS+6d | 116d | 0d | Shop Drawings Submittals [60 h] |
| SD-CS-L23-932 |  | Review & Approval of SD of IP CCTV & Accesss Control System at L23 | 30d | 2015-06-04 | 2015-07-08 | SD-CS-L23-922 SS+7d, SD-CS-L23-922 FF+7d | 187d | 94d | Shop Drawings Approval [40 h] |
|  | 28 | **Level 24 Floor - Shop drawings** |  | 2015-06-03 | 2015-07-21 |  |  |  |  |
| SD-CS-L24-942 |  | Preparation & Submittals of SD of IP CCTV & Accesss Control System at L24 | 30d | 2015-06-03 | 2015-07-07 | SD-CS-L23-922 SS+6d | 116d | 0d | Shop Drawings Submittals [60 h] |
| SD-CS-L24-952 |  | Review & Approval of SD of IP CCTV & Accesss Control System at L24 | 30d | 2015-06-15 | 2015-07-21 | SD-CS-L24-942 SS+10d, SD-CS-L24-942 FF+10d | 198d | 105d | Shop Drawings Approval [40 h] |

| ID | WBS | Activity | Duration | Start | Finish | Predecessors | Total float | Free float | Resources |
| --- | --- | --- | --- | --- | --- | --- | --- | --- | --- |
|  | 29 | **Level 25 Floor - Shop drawings** |  | 2015-06-10 | 2015-07-28 |  |  |  |  |
| SD-CS-L25-962 |  | Preparation & Submittals of SD of IP CCTV & Accesss Control System at L25 | 30d | 2015-06-10 | 2015-07-14 | SD-CS-L24-942 SS+6d | 116d | 0d | Shop Drawings Submittals [60 h] |
| SD-CS-L25-972 |  | Review & Approval of SD of IP CCTV & Accesss Control System at L25 | 30d | 2015-06-22 | 2015-07-28 | SD-CS-L25-962 SS+10d, SD-CS-L25-962 FF+10d | 192d | 99d | Shop Drawings Approval [40 h] |
|  | 30 | **Level 26 Floor - Shop drawings** |  | 2015-06-17 | 2015-08-04 |  |  |  |  |
| SD-CS-L26-982 |  | Preparation & Submittals of SD of IP CCTV & Accesss Control System at L26 | 30d | 2015-06-17 | 2015-07-23 | SD-CS-L25-962 SS+6d | 116d | 0d | Shop Drawings Submittals [60 h] |
| SD-CS-L26-992 |  | Review & Approval of SD of IP CCTV & Accesss Control System at L26 | 30d | 2015-06-29 | 2015-08-04 | SD-CS-L26-982 SS+10d, SD-CS-L26-982 FF+10d | 186d | 93d | Shop Drawings Approval [40 h] |
|  | 31 | **Level 27 Floor - Shop drawings** |  | 2015-06-24 | 2015-08-11 |  |  |  |  |
| SD-CS-L27-1002 |  | Preparation & Submittals of SD of IP CCTV & Accesss Control System at L27 | 30d | 2015-06-24 | 2015-07-30 | SD-CS-L26-982 SS+6d | 116d | 0d | Shop Drawings Submittals [60 h] |
| SD-CS-L27-1012 |  | Review & Approval of SD of IP CCTV & Accesss Control System at L27 | 30d | 2015-07-06 | 2015-08-11 | SD-CS-L27-1002 SS+10d, SD-CS-L27-1002 FF+10d | 180d | 87d | Shop Drawings Approval [40 h] |
|  | 32 | **Level 28 Floor - Shop drawings** |  | 2015-07-01 | 2015-08-18 |  |  |  |  |
| SD-CS-L28-1022 |  | Preparation & Submittals of SD of IP CCTV & Accesss Control System at L28 | 30d | 2015-07-01 | 2015-08-06 | SD-CS-L27-1002 SS+6d | 116d | 0d | Shop Drawings Submittals [60 h] |
| SD-CS-L28-1032 |  | Review & Approval of SD of IP CCTV & Accesss Control System at L28 | 30d | 2015-07-13 | 2015-08-18 | SD-CS-L28-1022 SS+10d, SD-CS-L28-1022 FF+10d | 174d | 90d | Shop Drawings Approval [40 h] |
|  | 33 | **Level 29 Floor - Shop drawings** |  | 2015-07-08 | 2015-08-25 |  |  |  |  |
| SD-CS-L29-1042 |  | Preparation & Submittals of SD of IP CCTV & Accesss Control System at L29 | 30d | 2015-07-08 | 2015-08-13 | SD-CS-L28-1022 SS+6d | 116d | 0d | Shop Drawings Submittals [60 h] |
| SD-CS-L29-1052 |  | Review & Approval of SD of IP CCTV & Accesss Control System at L29 | 30d | 2015-07-22 | 2015-08-25 | SD-CS-L29-1042 SS+10d, SD-CS-L29-1042 FF+10d | 168d | 84d | Shop Drawings Approval [40 h] |
|  | 34 | **Level 30 Floor - Shop drawings** |  | 2015-07-18 | 2015-09-01 |  |  |  |  |
| SD-CS-L30-1062 |  | Preparation & Submittals of SD of IP CCTV & Accesss Control System at L30 | 30d | 2015-07-18 | 2015-08-20 | SD-CS-L29-1042 SS+6d | 116d | 0d | Shop Drawings Submittals [60 h] |
| SD-CS-L30-1072 |  | Review & Approval of SD of IP CCTV & Accesss Control System at L30 | 30d | 2015-07-29 | 2015-09-01 | SD-CS-L30-1062 SS+10d, SD-CS-L30-1062 FF+10d | 162d | 82d | Shop Drawings Approval [40 h] |
|  | 35 | **Level 31 Floor - Shop drawings** |  | 2015-07-25 | 2015-09-08 |  |  |  |  |
| SD-CS-L31-1082 |  | Preparation & Submittals of SD of IP CCTV & Accesss Control System at L31 | 30d | 2015-07-25 | 2015-08-27 | SD-CS-L30-1062 SS+6d | 116d | 0d | Shop Drawings Submittals [60 h] |
| SD-CS-L31-1092 |  | Review & Approval of SD of IP CCTV & Accesss Control System at L31 | 30d | 2015-08-05 | 2015-09-08 | SD-CS-L31-1082 SS+10d, SD-CS-L31-1082 FF+10d | 176d | 96d | Shop Drawings Approval [40 h] |
|  | 36 | **Level 32 Floor - Shop drawings** |  | 2015-08-01 | 2015-09-15 |  |  |  |  |
| SD-CS-L32-1102 |  | Preparation & Submittals of SD of IP CCTV & Accesss Control System at L32 | 30d | 2015-08-01 | 2015-09-03 | SD-CS-L31-1082 SS+6d | 116d | 0d | Shop Drawings Submittals [60 h] |
| SD-CS-L32-1112 |  | Review & Approval of SD of IP CCTV & Accesss Control System at L32 | 30d | 2015-08-12 | 2015-09-15 | SD-CS-L32-1102 SS+10d, SD-CS-L32-1102 FF+10d | 170d | 90d | Shop Drawings Approval [40 h] |

| ID | WBS | Activity | Duration | Start | Finish | Predecessors | Total float | Free float | Resources |
| --- | --- | --- | --- | --- | --- | --- | --- | --- | --- |
|  | 37 | **Level 33 Floor - Shop drawings** |  | 2015-08-08 | 2015-09-26 |  |  |  |  |
| SD-CS-L33-1122 |  | Preparation & Submittals of SD of IP CCTV & Accesss Control System at L33 | 30d | 2015-08-08 | 2015-09-10 | SD-CS-L32-1102 SS+6d | 116d | 0d | Shop Drawings Submittals [60 h] |
| SD-CS-L33-1132 |  | Review & Approval of SD of IP CCTV & Accesss Control System at L33 | 30d | 2015-08-19 | 2015-09-26 | SD-CS-L33-1122 SS+10d, SD-CS-L33-1122 FF+10d | 164d | 85d | Shop Drawings Approval [40 h] |
|  | 38 | **Level 34 Floor - Shop drawings** |  | 2015-08-15 | 2015-10-03 |  |  |  |  |
| SD-CS-L34-1142 |  | Preparation & Submittals of SD of IP CCTV & Accesss Control System at L34 | 30d | 2015-08-15 | 2015-09-17 | SD-CS-L33-1122 SS+6d | 116d | 0d | Shop Drawings Submittals [60 h] |
| SD-CS-L34-1152 |  | Review & Approval of SD of IP CCTV & Accesss Control System at L34 | 30d | 2015-08-26 | 2015-10-03 | SD-CS-L34-1142 SS+10d, SD-CS-L34-1142 FF+10d | 172d | 85d | Shop Drawings Approval [40 h] |
|  | 39 | **Level 35 Floor - Shop drawings** |  | 2015-08-22 | 2015-10-10 |  |  |  |  |
| SD-CS-L35-1162 |  | Preparation & Submittals of SD of IP CCTV & Accesss Control System at L35 | 30d | 2015-08-22 | 2015-09-28 | SD-CS-L34-1142 SS+6d | 116d | 0d | Shop Drawings Submittals [60 h] |
| SD-CS-L35-1172 |  | Review & Approval of SD of IP CCTV & Accesss Control System at L35 | 30d | 2015-09-02 | 2015-10-10 | SD-CS-L35-1162 SS+10d, SD-CS-L35-1162 FF+10d | 166d | 93d | Shop Drawings Approval [40 h] |
|  | 40 | **Level 36 Floor - Shop drawings** |  | 2015-08-29 | 2015-10-13 |  |  |  |  |
| SD-CS-L36-1182 |  | Preparation & Submittals of SD of IP CCTV & Accesss Control System at L36 | 30d | 2015-08-29 | 2015-10-05 | SD-CS-L35-1162 SS+6d | 116d | 0d | Shop Drawings Submittals [60 h] |
| SD-CS-L36-1192 |  | Review & Approval of SD of IP CCTV & Accesss Control System at L36 | 30d | 2015-09-06 | 2015-10-13 | SD-CS-L36-1182 SS+7d, SD-CS-L36-1182 FF+7d | 163d | 90d | Shop Drawings Approval [40 h] |
|  | 41 | **Level 37 Floor - Shop drawings** |  | 2015-09-05 | 2015-10-20 |  |  |  |  |
| SD-CS-L37-1202 |  | Preparation & Submittals of SD of IP CCTV & Accesss Control System at L37 | 30d | 2015-09-05 | 2015-10-12 | SD-CS-L36-1182 SS+6d | 116d | 0d | Shop Drawings Submittals [60 h] |
| SD-CS-L37-1212 |  | Review & Approval of SD of IP CCTV & Accesss Control System at L37 | 30d | 2015-09-13 | 2015-10-20 | SD-CS-L37-1202 SS+7d, SD-CS-L37-1202 FF+7d | 157d | 88d | Shop Drawings Approval [40 h] |
|  | 42 | **Level 38 Floor - Shop drawings** |  | 2015-09-12 | 2015-10-27 |  |  |  |  |
| SD-CS-L38-1222 |  | Preparation & Submittals of SD of IP CCTV & Accesss Control System at L38 | 30d | 2015-09-12 | 2015-10-19 | SD-CS-L37-1202 SS+6d | 116d | 0d | Shop Drawings Submittals [60 h] |
| SD-CS-L38-1232 |  | Review & Approval of SD of IP CCTV & Accesss Control System at L38 | 30d | 2015-09-23 | 2015-10-27 | SD-CS-L38-1222 SS+7d, SD-CS-L38-1222 FF+7d | 171d | 102d | Shop Drawings Approval [40 h] |
|  | 43 | **Level 39 Floor - Shop drawings** |  | 2015-09-19 | 2015-11-07 |  |  |  |  |
| SD-CS-L39-1242 |  | Preparation & Submittals of SD of IP CCTV & Accesss Control System at L39 | 30d | 2015-09-19 | 2015-10-26 | SD-CS-L38-1222 SS+6d | 116d | 0d | Shop Drawings Submittals [60 h] |
| SD-CS-L39-1252 |  | Review & Approval of SD of IP CCTV & Accesss Control System at L39 | 30d | 2015-10-04 | 2015-11-07 | SD-CS-L39-1242 SS+10d, SD-CS-L39-1242 FF+10d | 162d | 93d | Shop Drawings Approval [40 h] |
|  | 44 | **Level 40 Floor - Shop drawings** |  | 2015-09-29 | 2015-11-14 |  |  |  |  |
| SD-CS-L40-1262 |  | Preparation & Submittals of SD of IP CCTV & Accesss Control System at L40 | 30d | 2015-09-29 | 2015-11-02 | SD-CS-L39-1242 SS+6d | 116d | 0d | Shop Drawings Submittals [60 h] |
| SD-CS-L40-1272 |  | Review & Approval of SD of IP CCTV & Accesss Control System at L40 | 30d | 2015-10-11 | 2015-11-14 | SD-CS-L40-1262 SS+10d, SD-CS-L40-1262 FF+10d | 156d | 87d | Shop Drawings Approval [40 h] |

| ID | WBS | Activity | Duration | Start | Finish | Predecessors | Total float | Free float | Resources |
| --- | --- | --- | --- | --- | --- | --- | --- | --- | --- |
|  | 45 | **Level 41 Floor - Shop drawings** |  | 2015-10-06 | 2015-11-21 |  |  |  |  |
| SD-CS-L41-1282 |  | Preparation & Submittals of SD of IP CCTV & Accesss Control System at L41 | 30d | 2015-10-06 | 2015-11-09 | SD-CS-L40-1262 SS+6d | 116d | 0d | Shop Drawings Submittals [60 h] |
| SD-CS-L41-1292 |  | Review & Approval of SD of IP CCTV & Accesss Control System at L41 | 30d | 2015-10-18 | 2015-11-21 | SD-CS-L41-1282 SS+10d, SD-CS-L41-1282 FF+10d | 150d | 85d | Shop Drawings Approval [40 h] |
|  | 46 | **Level 42 Floor - Shop drawings** |  | 2015-10-13 | 2015-11-28 |  |  |  |  |
| SD-CS-L42-1302 |  | Preparation & Submittals of SD of IP CCTV & Accesss Control System at L42 | 30d | 2015-10-13 | 2015-11-16 | SD-CS-L41-1282 SS+6d | 116d | 0d | Shop Drawings Submittals [60 h] |
| SD-CS-L42-1312 |  | Review & Approval of SD of IP CCTV & Accesss Control System at L42 | 30d | 2015-10-25 | 2015-11-28 | SD-CS-L42-1302 SS+10d, SD-CS-L42-1302 FF+10d | 144d | 93d | Shop Drawings Approval [40 h] |
|  | 47 | **Level 43 Floor - Shop drawings** |  | 2015-10-20 | 2015-12-05 |  |  |  |  |
| SD-CS-L43-1322 |  | Preparation & Submittals of SD of IP CCTV & Accesss Control System at L43 | 30d | 2015-10-20 | 2015-11-23 | SD-CS-L42-1302 SS+6d | 116d | 0d | Shop Drawings Submittals [60 h] |
| SD-CS-L43-1332 |  | Review & Approval of SD of IP CCTV & Accesss Control System at L43 | 30d | 2015-11-01 | 2015-12-05 | SD-CS-L43-1322 SS+10d, SD-CS-L43-1322 FF+10d | 138d | 87d | Shop Drawings Approval [40 h] |
|  | 48 | **Level 44 Floor - Shop drawings** |  | 2015-10-27 | 2015-12-12 |  |  |  |  |
| SD-CS-L44-1342 |  | Preparation & Submittals of SD of IP CCTV & Accesss Control System at L44 | 30d | 2015-10-27 | 2015-11-30 | SD-CS-L43-1322 SS+6d | 116d | 0d | Shop Drawings Submittals [60 h] |
| SD-CS-L44-1352 |  | Review & Approval of SD of IP CCTV & Accesss Control System at L44 | 30d | 2015-11-08 | 2015-12-12 | SD-CS-L44-1342 SS+10d, SD-CS-L44-1342 FF+10d | 152d | 101d | Shop Drawings Approval [40 h] |
|  | 49 | **Level 45 Floor - Shop drawings** |  | 2015-11-03 | 2015-12-20 |  |  |  |  |
| SD-CS-L45-1362 |  | Preparation & Submittals of SD of IP CCTV & Accesss Control System at L45 | 30d | 2015-11-03 | 2015-12-07 | SD-CS-L44-1342 SS+6d | 116d | 0d | Shop Drawings Submittals [60 h] |
| SD-CS-L45-1372 |  | Review & Approval of SD of IP CCTV & Accesss Control System at L45 | 30d | 2015-11-15 | 2015-12-20 | SD-CS-L45-1362 SS+10d, SD-CS-L45-1362 FF+10d | 146d | 95d | Shop Drawings Approval [40 h] |
|  | 50 | **Level 46 Floor - Shop drawings** |  | 2015-11-10 | 2015-12-27 |  |  |  |  |
| SD-CS-L46-1382 |  | Preparation & Submittals of SD of IP CCTV & Accesss Control System at L46 | 30d | 2015-11-10 | 2015-12-14 | SD-CS-L45-1362 SS+6d | 116d | 0d | Shop Drawings Submittals [60 h] |
| SD-CS-L46-1392 |  | Review & Approval of SD of IP CCTV & Accesss Control System at L46 | 30d | 2015-11-22 | 2015-12-27 | SD-CS-L46-1382 SS+10d, SD-CS-L46-1382 FF+10d | 140d | 89d | Shop Drawings Approval [40 h] |
|  | 53 | **Level 47 Floor - Shop drawings** |  | 2015-11-17 | 2016-01-03 |  |  |  |  |
| SD-CS-L47-1402 |  | Preparation & Submittals of SD of IP CCTV & Accesss Control System at L47 | 30d | 2015-11-17 | 2015-12-22 | SD-CS-L46-1382 SS+6d | 116d | 0d | Shop Drawings Submittals [60 h] |
| SD-CS-L47-1412 |  | Review & Approval of SD of IP CCTV & Accesss Control System at L47 | 30d | 2015-11-29 | 2016-01-03 | SD-CS-L47-1402 SS+10d, SD-CS-L47-1402 FF+10d | 134d | 85d | Shop Drawings Approval [40 h] |
|  | 51 | **Level 48 Floor - Shop drawings** |  | 2015-11-24 | 2016-01-10 |  |  |  |  |
| SD-CS-L48-1422 |  | Preparation & Submittals of SD of IP CCTV & Accesss Control System at L48 | 30d | 2015-11-24 | 2015-12-29 | SD-CS-L47-1402 SS+6d | 116d | 0d | Shop Drawings Submittals [60 h] |
| SD-CS-L48-1432 |  | Review & Approval of SD of IP CCTV & Accesss Control System at L48 | 30d | 2015-12-06 | 2016-01-10 | SD-CS-L48-1422 SS+10d, SD-CS-L48-1422 FF+10d | 128d | 80d | Shop Drawings Approval [40 h] |

| ID | WBS | Activity | Duration | Start | Finish | Predecessors | Total float | Free float | Resources |
| --- | --- | --- | --- | --- | --- | --- | --- | --- | --- |
|  | 52 | **Level 49 Floor - Shop drawings** |  | 2015-12-01 | 2016-01-17 |  |  |  |  |
| SD-CS-L49-1442 |  | Preparation & Submittals of SD of IP CCTV & Accesss Control System at L49 | 30d | 2015-12-01 | 2016-01-05 | SD-CS-L48-1422 SS+6d | 116d | 0d | Shop Drawings Submittals [60 h] |
| SD-CS-L49-1452 |  | Review & Approval of SD of IP CCTV & Accesss Control System at L49 | 30d | 2015-12-13 | 2016-01-17 | SD-CS-L49-1442 SS+10d, SD-CS-L49-1442 FF+10d | 122d | 86d | Shop Drawings Approval [40 h] |
|  | 54 | **Level 50 Floor - Shop drawings** |  | 2015-12-08 | 2016-01-24 |  |  |  |  |
| SD-CS-L50-1462 |  | Preparation & Submittals of SD of IP CCTV & Accesss Control System at L50 | 30d | 2015-12-08 | 2016-01-12 | SD-CS-L49-1442 SS+6d | 116d | 0d | Shop Drawings Submittals [60 h] |
| SD-CS-L50-1472 |  | Review & Approval of SD of IP CCTV & Accesss Control System at L50 | 30d | 2015-12-21 | 2016-01-24 | SD-CS-L50-1462 SS+10d, SD-CS-L50-1462 FF+10d | 116d | 86d | Shop Drawings Approval [40 h] |
|  | 55 | **Level 51 Floor - Shop drawings** |  | 2015-12-15 | 2016-01-31 |  |  |  |  |
| SD-CS-L51-2342 |  | Preparation & Submittals of SD of IP CCTV & Accesss Control System at L51 | 30d | 2015-12-15 | 2016-01-19 | SD-CS-L50-1462 SS+6d | 130d | 0d | Shop Drawings Submittals [60 h] |
| SD-CS-L51-2352 |  | Review & Approval of SD of IP CCTV & Accesss Control System at L51 | 30d | 2015-12-28 | 2016-01-31 | SD-CS-L51-2342 SS+10d, SD-CS-L51-2342 FF+10d | 130d | 100d | Shop Drawings Approval [40 h] |
|  | 7 | **Communication System** |  | 2014-11-24 | 2016-03-21 |  |  |  |  |
|  | R | **Basement 3 Floor level - Shop drawings** |  | 2014-11-24 | 2015-01-10 |  |  |  |  |
| SD-CS-B3-602 |  | Preparation & Submittals of SD of Communication system Drawings at B3 | 30d | 2014-11-24 | 2014-12-29 | PQ-CS-C-492 | 93d | 0d | Shop Drawings Submittals [60 h] |
| SD-CS-B3-612 |  | Review & Approval of SD of Communication system Drawings at B3 | 30d | 2014-12-06 | 2015-01-10 | SD-CS-B3-602 SS+10d, SD-CS-B3-602 FF+10d | 410d | 281d | Shop Drawings Approval [40 h] |
|  | 1 | **Basement 2 Floor level - Shop drawings** |  | 2014-12-02 | 2015-01-18 |  |  |  |  |
| SD-CS-B3-582 |  | Preparation & Submittals of SD of Communication system Drawings at B2 | 30d | 2014-12-02 | 2015-01-06 | SD-CS-B3-602 SS+7d | 93d | 0d | Shop Drawings Submittals [60 h] |
| SD-CS-B3-592 |  | Review & Approval of SD of Communication system Drawings at B2 | 30d | 2014-12-14 | 2015-01-18 | SD-CS-B3-582 SS+10d, SD-CS-B3-582 FF+10d | 335d | 294d | Shop Drawings Approval [40 h] |
|  | 2 | **Basement 1 Floor level - Shop drawings** |  | 2014-12-09 | 2015-01-25 |  |  |  |  |
| SD-CS-B2-382 |  | Preparation & Submittals of SD of Communication system Drawings at B1 | 30d | 2014-12-09 | 2015-01-13 | SD-CS-B3-582 SS+6d | 93d | 0d | Shop Drawings Submittals [60 h] |
| SD-CS-B2-392 |  | Review & Approval of SD of Communication system Drawings at B1 | 30d | 2014-12-22 | 2015-01-25 | SD-CS-B2-382 SS+10d, SD-CS-B2-382 FF+10d | 354d | 308d | Shop Drawings Approval [40 h] |
|  | 3 | **Ground Floor level - Shop drawings** |  | 2014-12-17 | 2015-02-02 |  |  |  |  |
| SD-CS-B1-382 |  | Preparation & Submittals of SD of Communication system Drawings at GF | 30d | 2014-12-17 | 2015-01-21 | SD-CS-B2-382 SS+7d, G-CD-003 | 93d | 0d | Shop Drawings Submittals [60 h] |
| SD-CS-B1-392 |  | Review & Approval of SD of Communication system Drawings at GF | 30d | 2014-12-30 | 2015-02-02 | SD-CS-B1-382 SS+10d, SD-CS-B1-382 FF+10d | 162d | 43d | Shop Drawings Approval [40 h] |
|  | 4 | **Mezzanine Floor level - Shop drawings** |  | 2014-12-27 | 2015-02-11 |  |  |  |  |
| SD-CS-GF-382 |  | Preparation & Submittals of SD of Communication system Drawings at ML | 30d | 2014-12-27 | 2015-01-29 | SD-CS-B1-382 SS+7d | 93d | 0d | Shop Drawings Submittals [60 h] |
| SD-CS-GF-392 |  | Review & Approval of SD of Communication system Drawings at ML | 30d | 2015-01-07 | 2015-02-11 | SD-CS-GF-382 SS+10d, SD-CS-GF-382 FF+10d | 175d | 56d | Shop Drawings Approval [40 h] |

| ID | WBS | Activity | Duration | Start | Finish | Predecessors | Total float | Free float | Resources |
| --- | --- | --- | --- | --- | --- | --- | --- | --- | --- |
|  | 5 | **Level 1 Floor - Shop drawings** |  | 2015-01-04 | 2015-02-19 |  |  |  |  |
| SD-CS-L1-402 |  | Preparation & Submittals of SD of Communication system Drawings at L1 | 30d | 2015-01-04 | 2015-02-07 | SD-CS-GF-382 SS+7d | 188d | 0d | Shop Drawings Submittals [60 h] |
| SD-CS-L1-412 |  | Review & Approval of SD of Communication system Drawings at L1 | 30d | 2015-01-15 | 2015-02-19 | SD-CS-L1-402 SS+10d, SD-CS-L1-402 FF+10d | 188d | 69d | Shop Drawings Approval [40 h] |
|  | 6 | **Level 2 Floor - Shop drawings** |  | 2015-01-04 | 2015-02-19 |  |  |  |  |
| SD-CS-L2-422 |  | Preparation & Submittals of SD of Communication system Drawings at L2 | 30d | 2015-01-04 | 2015-02-07 | SD-CS-GF-382 SS+7d | 93d | 0d | Shop Drawings Submittals [60 h] |
| SD-CS-L2-432 |  | Review & Approval of SD of Communication system Drawings at L2 | 30d | 2015-01-15 | 2015-02-19 | SD-CS-L2-422 SS+10d, SD-CS-L2-422 FF+10d | 233d | 109d | Shop Drawings Approval [40 h] |
|  | 7 | **Level 3 Floor - Shop drawings** |  | 2015-01-12 | 2015-02-28 |  |  |  |  |
| SD-CS-L3-442 |  | Preparation & Submittals of SD of Communication system Drawings at L3 | 30d | 2015-01-12 | 2015-02-16 | SD-CS-L2-422 SS+7d | 93d | 0d | Shop Drawings Submittals [60 h] |
| SD-CS-L3-452 |  | Review & Approval of SD of Communication system Drawings at L3 | 30d | 2015-01-24 | 2015-02-28 | SD-CS-L3-442 SS+10d, SD-CS-L3-442 FF+10d | 227d | 102d | Shop Drawings Approval [40 h] |
|  | 8 | **Level 4 Floor - Shop drawings** |  | 2015-01-20 | 2015-03-08 |  |  |  |  |
| SD-CS-L4-1462 |  | Preparation & Submittals of SD of Communication system Drawings at L4 | 30d | 2015-01-20 | 2015-02-24 | SD-CS-L3-442 SS+7d | 93d | 0d | Shop Drawings Submittals [60 h] |
| SD-CS-L4-1472 |  | Review & Approval of SD of Communication system Drawings at L4 | 30d | 2015-02-01 | 2015-03-08 | SD-CS-L4-1462 SS+10d, SD-CS-L4-1462 FF+10d | 220d | 95d | Shop Drawings Approval [40 h] |
|  | 9 | **Level 5 Floor - Shop drawings** |  | 2015-01-28 | 2015-03-16 |  |  |  |  |
| SD-CS-L5-482 |  | Preparation & Submittals of SD of Communication system Drawings at L5 | 30d | 2015-01-28 | 2015-03-04 | SD-CS-L4-1462 SS+7d | 93d | 0d | Shop Drawings Submittals [60 h] |
| SD-CS-L5-492 |  | Review & Approval of SD of Communication system Drawings at L5 | 30d | 2015-02-09 | 2015-03-16 | SD-CS-L5-482 SS+10d, SD-CS-L5-482 FF+10d | 213d | 88d | Shop Drawings Approval [40 h] |
|  | 10 | **Level 6 Floor - Shop drawings** |  | 2015-02-05 | 2015-03-24 |  |  |  |  |
| SD-CS-L6-502 |  | Preparation & Submittals of SD of Communication system Drawings at L6 | 30d | 2015-02-05 | 2015-03-12 | SD-CS-L5-482 SS+7d | 93d | 0d | Shop Drawings Submittals [60 h] |
| SD-CS-L6-512 |  | Review & Approval of SD of Communication system Drawings at L6 | 30d | 2015-02-18 | 2015-03-24 | SD-CS-L6-502 SS+10d, SD-CS-L6-502 FF+10d | 206d | 81d | Shop Drawings Approval [40 h] |
|  | 11 | **Level 7 Floor - Shop drawings** |  | 2015-02-15 | 2015-04-01 |  |  |  |  |
| SD-CS-L7-522 |  | Preparation & Submittals of SD of Communication system Drawings at L7 | 30d | 2015-02-15 | 2015-03-21 | SD-CS-L6-502 SS+7d | 93d | 0d | Shop Drawings Submittals [60 h] |
| SD-CS-L7-532 |  | Review & Approval of SD of Communication system Drawings at L7 | 30d | 2015-02-26 | 2015-04-01 | SD-CS-L7-522 SS+10d, SD-CS-L7-522 FF+10d | 219d | 94d | Shop Drawings Approval [40 h] |
|  | 12 | **Level 8 Floor - Shop drawings** |  | 2015-02-23 | 2015-04-09 |  |  |  |  |
| SD-CS-L8-542 |  | Preparation & Submittals of SD of Communication system Drawings at L8 | 30d | 2015-02-23 | 2015-03-29 | SD-CS-L7-522 SS+7d | 93d | 0d | Shop Drawings Submittals [60 h] |
| SD-CS-L8-552 |  | Review & Approval of SD of Communication system Drawings at L8 | 30d | 2015-03-07 | 2015-04-09 | SD-CS-L8-542 SS+10d, SD-CS-L8-542 FF+10d | 212d | 87d | Shop Drawings Approval [40 h] |

| ID | WBS | Activity | Duration | Start | Finish | Predecessors | Total float | Free float | Resources |
| --- | --- | --- | --- | --- | --- | --- | --- | --- | --- |
|  | 13 | **Level 9 Floor - Shop drawings** |  | 2015-03-03 | 2015-04-18 |  |  |  |  |
| SD-CS-L9-562 |  | Preparation & Submittals of SD of Communication system Drawings at L9 | 30d | 2015-03-03 | 2015-04-06 | SD-CS-L8-542 SS+7d | 93d | 0d | Shop Drawings Submittals [60 h] |
| SD-CS-L9-572 |  | Review & Approval of SD of Communication system Drawings at L9 | 30d | 2015-03-15 | 2015-04-18 | SD-CS-L9-562 SS+10d, SD-CS-L9-562 FF+10d | 225d | 100d | Shop Drawings Approval [40 h] |
|  | 14 | **Level 10 Floor - Shop drawings** |  | 2015-03-11 | 2015-04-26 |  |  |  |  |
| SD-CS-L10-582 |  | Preparation & Submittals of SD of Communication system Drawings at L10 | 30d | 2015-03-11 | 2015-04-14 | SD-CS-L9-562 SS+7d | 93d | 0d | Shop Drawings Submittals [60 h] |
| SD-CS-L10-592 |  | Review & Approval of SD of Communication system Drawings at L10 | 30d | 2015-03-23 | 2015-04-26 | SD-CS-L10-582 SS+10d, SD-CS-L10-582 FF+10d | 218d | 93d | Shop Drawings Approval [40 h] |
|  | 15 | **Level 11 Floor - Shop drawings** |  | 2015-03-19 | 2015-05-04 |  |  |  |  |
| SD-CS-L11-602 |  | Preparation & Submittals of SD of Communication system Drawings at L11 | 30d | 2015-03-19 | 2015-04-22 | SD-CS-L10-582 SS+7d | 93d | 0d | Shop Drawings Submittals [60 h] |
| SD-CS-L11-612 |  | Review & Approval of SD of Communication system Drawings at L11 | 30d | 2015-03-31 | 2015-05-04 | SD-CS-L11-602 SS+10d, SD-CS-L11-602 FF+10d | 211d | 86d | Shop Drawings Approval [40 h] |
|  | 16 | **Level 12 Floor - Shop drawings** |  | 2015-03-28 | 2015-05-12 |  |  |  |  |
| SD-CS-L12-622 |  | Preparation & Submittals of SD of Communication system Drawings at L12 | 30d | 2015-03-28 | 2015-04-30 | SD-CS-L11-602 SS+7d | 93d | 0d | Shop Drawings Submittals [60 h] |
| SD-CS-L12-632 |  | Review & Approval of SD of Communication system Drawings at L12 | 30d | 2015-04-08 | 2015-05-12 | SD-CS-L12-622 SS+10d, SD-CS-L12-622 FF+10d | 204d | 79d | Shop Drawings Approval [40 h] |
|  | 17 | **Level 13 Floor - Shop drawings** |  | 2015-04-05 | 2015-05-20 |  |  |  |  |
| SD-CS-L13-642 |  | Preparation & Submittals of SD of Communication system Drawings at L13 | 30d | 2015-04-05 | 2015-05-09 | SD-CS-L12-622 SS+7d | 93d | 0d | Shop Drawings Submittals [60 h] |
| SD-CS-L13-652 |  | Review & Approval of SD of Communication system Drawings at L13 | 30d | 2015-04-16 | 2015-05-20 | SD-CS-L13-642 SS+10d, SD-CS-L13-642 FF+10d | 197d | 72d | Shop Drawings Approval [40 h] |
|  | 18 | **Level 14 Floor - Shop drawings** |  | 2015-04-13 | 2015-05-28 |  |  |  |  |
| SD-CS-L14-662 |  | Preparation & Submittals of SD of Communication system Drawings at L14 | 30d | 2015-04-13 | 2015-05-17 | SD-CS-L13-642 SS+7d | 93d | 0d | Shop Drawings Submittals [60 h] |
| SD-CS-L14-672 |  | Review & Approval of SD of Communication system Drawings at L14 | 30d | 2015-04-25 | 2015-05-28 | SD-CS-L14-662 SS+10d, SD-CS-L14-662 FF+10d | 190d | 65d | Shop Drawings Approval [40 h] |
|  | 19 | **Level 15 Floor - Shop drawings** |  | 2015-04-21 | 2015-06-06 |  |  |  |  |
| SD-CS-L15-682 |  | Preparation & Submittals of SD of Communication system Drawings at L15 | 30d | 2015-04-21 | 2015-05-25 | SD-CS-L14-662 SS+7d | 93d | 0d | Shop Drawings Submittals [60 h] |
| SD-CS-L15-692 |  | Review & Approval of SD of Communication system Drawings at L15 | 30d | 2015-05-03 | 2015-06-06 | SD-CS-L15-682 SS+10d, SD-CS-L15-682 FF+10d | 183d | 64d | Shop Drawings Approval [40 h] |
|  | 20 | **Level 16 Floor - Shop drawings** |  | 2015-04-29 | 2015-06-14 |  |  |  |  |
| SD-CS-L16-702 |  | Preparation & Submittals of SD of Communication system Drawings at L16 | 30d | 2015-04-29 | 2015-06-02 | SD-CS-L15-682 SS+7d | 93d | 0d | Shop Drawings Submittals [60 h] |
| SD-CS-L16-712 |  | Review & Approval of SD of Communication system Drawings at L16 | 30d | 2015-05-11 | 2015-06-14 | SD-CS-L16-702 SS+10d, SD-CS-L16-702 FF+10d | 176d | 57d | Shop Drawings Approval [40 h] |

| ID | WBS | Activity | Duration | Start | Finish | Predecessors | Total float | Free float | Resources |
| --- | --- | --- | --- | --- | --- | --- | --- | --- | --- |
|  | 21 | **Level 17 Floor - Shop drawings** |  | 2015-05-07 | 2015-06-22 |  |  |  |  |
| SD-CS-L17-1482 |  | Preparation & Submittals of SD of Communication system Drawings at L17 | 30d | 2015-05-07 | 2015-06-10 | SD-CS-L16-702 SS+7d | 93d | 0d | Shop Drawings Submittals [60 h] |
| SD-CS-L17-1492 |  | Review & Approval of SD of Communication system Drawings at L17 | 30d | 2015-05-19 | 2015-06-22 | SD-CS-L17-1482 SS+10d, SD-CS-L17-1482 FF+10d | 189d | 70d | Shop Drawings Approval [40 h] |
|  | 22 | **Level 18 Floor - Shop drawings** |  | 2015-05-16 | 2015-06-30 |  |  |  |  |
| SD-CS-L18-742 |  | Preparation & Submittals of SD of Communication system Drawings at L18 | 30d | 2015-05-16 | 2015-06-18 | SD-CS-L17-1482 SS+7d | 93d | 0d | Shop Drawings Submittals [60 h] |
| SD-CS-L18-752 |  | Review & Approval of SD of Communication system Drawings at L18 | 30d | 2015-05-27 | 2015-06-30 | SD-CS-L18-742 SS+10d, SD-CS-L18-742 FF+10d | 182d | 63d | Shop Drawings Approval [40 h] |
|  | 23 | **Level 19 Floor - Shop drawings** |  | 2015-05-24 | 2015-07-08 |  |  |  |  |
| SD-CS-L19-762 |  | Preparation & Submittals of SD of Communication system Drawings at L19 | 30d | 2015-05-24 | 2015-06-27 | SD-CS-L18-742 SS+7d | 93d | 0d | Shop Drawings Submittals [60 h] |
| SD-CS-L19-772 |  | Review & Approval of SD of Communication system Drawings at L19 | 30d | 2015-06-04 | 2015-07-08 | SD-CS-L19-762 SS+10d, SD-CS-L19-762 FF+10d | 175d | 59d | Shop Drawings Approval [40 h] |
|  | 24 | **Level 20 Floor - Shop drawings** |  | 2015-06-01 | 2015-07-19 |  |  |  |  |
| SD-CS-L20-782 |  | Preparation & Submittals of SD of Communication system Drawings at L20 | 30d | 2015-06-01 | 2015-07-05 | SD-CS-L19-762 SS+7d | 93d | 0d | Shop Drawings Submittals [60 h] |
| SD-CS-L20-792 |  | Review & Approval of SD of Communication system Drawings at L20 | 30d | 2015-06-13 | 2015-07-19 | SD-CS-L20-782 SS+10d, SD-CS-L20-782 FF+10d | 168d | 59d | Shop Drawings Approval [40 h] |
|  | 25 | **Level 21 Floor - Shop drawings** |  | 2015-06-09 | 2015-07-27 |  |  |  |  |
| SD-CS-L21-802 |  | Preparation & Submittals of SD of Communication system Drawings at L21 | 30d | 2015-06-09 | 2015-07-13 | SD-CS-L20-782 SS+7d | 93d | 0d | Shop Drawings Submittals [60 h] |
| SD-CS-L21-812 |  | Review & Approval of SD of Communication system Drawings at L21 | 30d | 2015-06-21 | 2015-07-27 | SD-CS-L21-802 SS+10d, SD-CS-L21-802 FF+10d | 161d | 66d | Shop Drawings Approval [40 h] |
|  | 26 | **Level 22 Floor - Shop drawings** |  | 2015-06-17 | 2015-08-04 |  |  |  |  |
| SD-CS-L22-822 |  | Preparation & Submittals of SD of Communication system Drawings at L22 | 30d | 2015-06-17 | 2015-07-23 | SD-CS-L21-802 SS+7d | 93d | 0d | Shop Drawings Submittals [60 h] |
| SD-CS-L22-832 |  | Review & Approval of SD of Communication system Drawings at L22 | 30d | 2015-06-29 | 2015-08-04 | SD-CS-L22-822 SS+10d, SD-CS-L22-822 FF+10d | 154d | 59d | Shop Drawings Approval [40 h] |
|  | 27 | **Level 23 Floor - Shop drawings** |  | 2015-06-25 | 2015-08-12 |  |  |  |  |
| SD-CS-L23-842 |  | Preparation & Submittals of SD of Communication system Drawings at L23 | 30d | 2015-06-25 | 2015-08-01 | SD-CS-L22-822 SS+7d | 93d | 0d | Shop Drawings Submittals [60 h] |
| SD-CS-L23-852 |  | Review & Approval of SD of Communication system Drawings at L23 | 30d | 2015-07-07 | 2015-08-12 | SD-CS-L23-842 SS+10d, SD-CS-L23-842 FF+10d | 147d | 66d | Shop Drawings Approval [40 h] |
|  | 28 | **Level 24 Floor - Shop drawings** |  | 2015-07-04 | 2015-08-20 |  |  |  |  |
| SD-CS-L24-862 |  | Preparation & Submittals of SD of Communication system Drawings at L24 | 30d | 2015-07-04 | 2015-08-09 | SD-CS-L23-842 SS+7d | 93d | 0d | Shop Drawings Submittals [60 h] |
| SD-CS-L24-872 |  | Review & Approval of SD of Communication system Drawings at L24 | 30d | 2015-07-18 | 2015-08-20 | SD-CS-L24-862 SS+10d, SD-CS-L24-862 FF+10d | 160d | 79d | Shop Drawings Approval [40 h] |

| ID | WBS | Activity | Duration | Start | Finish | Predecessors | Total float | Free float | Resources |
| --- | --- | --- | --- | --- | --- | --- | --- | --- | --- |
|  | 29 | **Level 25 Floor - Shop drawings** |  | 2015-07-12 | 2015-08-29 |  |  |  |  |
| SD-CS-L25-882 |  | Preparation & Submittals of SD of Communication system Drawings at L25 | 30d | 2015-07-12 | 2015-08-17 | SD-CS-L24-862 SS+7d | 93d | 0d | Shop Drawings Submittals [60 h] |
| SD-CS-L25-892 |  | Review & Approval of SD of Communication system Drawings at L25 | 30d | 2015-07-26 | 2015-08-29 | SD-CS-L25-882 SS+10d, SD-CS-L25-882 FF+10d | 153d | 72d | Shop Drawings Approval [40 h] |
|  | 30 | **Level 26 Floor - Shop drawings** |  | 2015-07-22 | 2015-09-06 |  |  |  |  |
| SD-CS-L26-902 |  | Preparation & Submittals of SD of Communication system Drawings at L26 | 30d | 2015-07-22 | 2015-08-25 | SD-CS-L25-882 SS+7d | 93d | 0d | Shop Drawings Submittals [60 h] |
| SD-CS-L26-912 |  | Review & Approval of SD of Communication system Drawings at L26 | 30d | 2015-08-03 | 2015-09-06 | SD-CS-L26-902 SS+10d, SD-CS-L26-902 FF+10d | 146d | 65d | Shop Drawings Approval [40 h] |
|  | 31 | **Level 27 Floor - Shop drawings** |  | 2015-07-30 | 2015-09-14 |  |  |  |  |
| SD-CS-L27-922 |  | Preparation & Submittals of SD of Communication system Drawings at L27 | 30d | 2015-07-30 | 2015-09-02 | SD-CS-L26-902 SS+7d | 93d | 0d | Shop Drawings Submittals [60 h] |
| SD-CS-L27-932 |  | Review & Approval of SD of Communication system Drawings at L27 | 30d | 2015-08-11 | 2015-09-14 | SD-CS-L27-922 SS+10d, SD-CS-L27-922 FF+10d | 139d | 58d | Shop Drawings Approval [40 h] |
|  | 32 | **Level 28 Floor - Shop drawings** |  | 2015-08-08 | 2015-09-26 |  |  |  |  |
| SD-CS-L28-942 |  | Preparation & Submittals of SD of Communication system Drawings at L28 | 30d | 2015-08-08 | 2015-09-10 | SD-CS-L27-922 SS+7d | 93d | 0d | Shop Drawings Submittals [60 h] |
| SD-CS-L28-952 |  | Review & Approval of SD of Communication system Drawings at L28 | 30d | 2015-08-19 | 2015-09-26 | SD-CS-L28-942 SS+10d, SD-CS-L28-942 FF+10d | 132d | 60d | Shop Drawings Approval [40 h] |
|  | 33 | **Level 29 Floor - Shop drawings** |  | 2015-08-16 | 2015-10-04 |  |  |  |  |
| SD-CS-L29-962 |  | Preparation & Submittals of SD of Communication system Drawings at L29 | 30d | 2015-08-16 | 2015-09-19 | SD-CS-L28-942 SS+7d | 93d | 0d | Shop Drawings Submittals [60 h] |
| SD-CS-L29-972 |  | Review & Approval of SD of Communication system Drawings at L29 | 30d | 2015-08-27 | 2015-10-04 | SD-CS-L29-962 SS+10d, SD-CS-L29-962 FF+10d | 145d | 73d | Shop Drawings Approval [40 h] |
|  | 34 | **Level 30 Floor - Shop drawings** |  | 2015-08-24 | 2015-10-12 |  |  |  |  |
| SD-CS-L30-982 |  | Preparation & Submittals of SD of Communication system Drawings at L30 | 30d | 2015-08-24 | 2015-09-30 | SD-CS-L29-962 SS+7d | 93d | 0d | Shop Drawings Submittals [60 h] |
| SD-CS-L30-992 |  | Review & Approval of SD of Communication system Drawings at L30 | 30d | 2015-09-05 | 2015-10-12 | SD-CS-L30-982 SS+10d, SD-CS-L30-982 FF+10d | 138d | 66d | Shop Drawings Approval [40 h] |
|  | 35 | **Level 31 Floor - Shop drawings** |  | 2015-09-01 | 2015-10-20 |  |  |  |  |
| SD-CS-L31-1002 |  | Preparation & Submittals of SD of Communication system Drawings at L31 | 30d | 2015-09-01 | 2015-10-08 | SD-CS-L30-982 SS+7d | 93d | 0d | Shop Drawings Submittals [60 h] |
| SD-CS-L31-1012 |  | Review & Approval of SD of Communication system Drawings at L31 | 30d | 2015-09-13 | 2015-10-20 | SD-CS-L31-1002 SS+10d, SD-CS-L31-1002 FF+10d | 131d | 59d | Shop Drawings Approval [40 h] |
|  | 36 | **Level 32 Floor - Shop drawings** |  | 2015-09-09 | 2015-10-28 |  |  |  |  |
| SD-CS-L32-1022 |  | Preparation & Submittals of SD of Communication system Drawings at L32 | 30d | 2015-09-09 | 2015-10-17 | SD-CS-L31-1002 SS+7d | 93d | 0d | Shop Drawings Submittals [60 h] |
| SD-CS-L32-1032 |  | Review & Approval of SD of Communication system Drawings at L32 | 30d | 2015-09-24 | 2015-10-28 | SD-CS-L32-1022 SS+10d, SD-CS-L32-1022 FF+10d | 124d | 52d | Shop Drawings Approval [40 h] |

| ID | WBS | Activity | Duration | Start | Finish | Predecessors | Total float | Free float | Resources |
| --- | --- | --- | --- | --- | --- | --- | --- | --- | --- |
|  | 37 | **Level 33 Floor - Shop drawings** |  | 2015-09-17 | 2015-11-05 |  |  |  |  |
| SD-CS-L33-1042 |  | Preparation & Submittals of SD of Communication system Drawings at L33 | 30d | 2015-09-17 | 2015-10-25 | SD-CS-L32-1022 SS+7d | 93d | 0d | Shop Drawings Submittals [60 h] |
| SD-CS-L33-1052 |  | Review & Approval of SD of Communication system Drawings at L33 | 30d | 2015-10-03 | 2015-11-05 | SD-CS-L33-1042 SS+10d, SD-CS-L33-1042 FF+10d | 117d | 50d | Shop Drawings Approval [40 h] |
|  | 38 | **Level 34 Floor - Shop drawings** |  | 2015-09-29 | 2015-11-14 |  |  |  |  |
| SD-CS-L34-1062 |  | Preparation & Submittals of SD of Communication system Drawings at L34 | 30d | 2015-09-29 | 2015-11-02 | SD-CS-L33-1042 SS+7d | 93d | 0d | Shop Drawings Submittals [60 h] |
| SD-CS-L34-1072 |  | Review & Approval of SD of Communication system Drawings at L34 | 30d | 2015-10-11 | 2015-11-14 | SD-CS-L34-1062 SS+10d, SD-CS-L34-1062 FF+10d | 115d | 49d | Shop Drawings Approval [40 h] |
|  | 39 | **Level 35 Floor - Shop drawings** |  | 2015-10-07 | 2015-11-22 |  |  |  |  |
| SD-CS-L35-1082 |  | Preparation & Submittals of SD of Communication system Drawings at L35 | 30d | 2015-10-07 | 2015-11-10 | SD-CS-L34-1062 SS+7d | 93d | 0d | Shop Drawings Submittals [60 h] |
| SD-CS-L35-1092 |  | Review & Approval of SD of Communication system Drawings at L35 | 30d | 2015-10-19 | 2015-11-22 | SD-CS-L35-1082 SS+10d, SD-CS-L35-1082 FF+10d | 108d | 56d | Shop Drawings Approval [40 h] |
|  | 40 | **Level 36 Floor - Shop drawings** |  | 2015-10-15 | 2015-11-30 |  |  |  |  |
| SD-CS-L36-1102 |  | Preparation & Submittals of SD of Communication system Drawings at L36 | 30d | 2015-10-15 | 2015-11-18 | SD-CS-L35-1082 SS+7d | 93d | 0d | Shop Drawings Submittals [60 h] |
| SD-CS-L36-1112 |  | Review & Approval of SD of Communication system Drawings at L36 | 30d | 2015-10-27 | 2015-11-30 | SD-CS-L36-1102 SS+10d, SD-CS-L36-1102 FF+10d | 101d | 49d | Shop Drawings Approval [40 h] |
|  | 41 | **Level 37 Floor - Shop drawings** |  | 2015-10-24 | 2015-12-08 |  |  |  |  |
| SD-CS-L37-1122 |  | Preparation & Submittals of SD of Communication system Drawings at L37 | 30d | 2015-10-24 | 2015-11-26 | SD-CS-L36-1102 SS+7d | 93d | 0d | Shop Drawings Submittals [60 h] |
| SD-CS-L37-1132 |  | Review & Approval of SD of Communication system Drawings at L37 | 30d | 2015-11-04 | 2015-12-08 | SD-CS-L37-1122 SS+10d, SD-CS-L37-1122 FF+10d | 114d | 62d | Shop Drawings Approval [40 h] |
|  | 42 | **Level 38 Floor - Shop drawings** |  | 2015-11-01 | 2015-12-16 |  |  |  |  |
| SD-CS-L38-1142 |  | Preparation & Submittals of SD of Communication system Drawings at L38 | 30d | 2015-11-01 | 2015-12-05 | SD-CS-L37-1122 SS+7d | 93d | 0d | Shop Drawings Submittals [60 h] |
| SD-CS-L38-1152 |  | Review & Approval of SD of Communication system Drawings at L38 | 30d | 2015-11-12 | 2015-12-16 | SD-CS-L38-1142 SS+10d, SD-CS-L38-1142 FF+10d | 116d | 55d | Shop Drawings Approval [40 h] |
|  | 43 | **Level 39 Floor - Shop drawings** |  | 2015-11-09 | 2015-12-26 |  |  |  |  |
| SD-CS-L39-1162 |  | Preparation & Submittals of SD of Communication system Drawings at L39 | 30d | 2015-11-09 | 2015-12-13 | SD-CS-L38-1142 SS+7d | 93d | 0d | Shop Drawings Submittals [60 h] |
| SD-CS-L39-1172 |  | Review & Approval of SD of Communication system Drawings at L39 | 30d | 2015-11-21 | 2015-12-26 | SD-CS-L39-1162 SS+10d, SD-CS-L39-1162 FF+10d | 110d | 52d | Shop Drawings Approval [40 h] |
|  | 44 | **Level 40 Floor - Shop drawings** |  | 2015-11-17 | 2016-01-03 |  |  |  |  |
| SD-CS-L40-1182 |  | Preparation & Submittals of SD of Communication system Drawings at L40 | 30d | 2015-11-17 | 2015-12-22 | SD-CS-L39-1162 SS+7d | 93d | 0d | Shop Drawings Submittals [60 h] |
| SD-CS-L40-1192 |  | Review & Approval of SD of Communication system Drawings at L40 | 30d | 2015-11-29 | 2016-01-03 | SD-CS-L40-1182 SS+10d, SD-CS-L40-1182 FF+10d | 103d | 45d | Shop Drawings Approval [40 h] |

| ID | WBS | Activity | Duration | Start | Finish | Predecessors | Total float | Free float | Resources |
| --- | --- | --- | --- | --- | --- | --- | --- | --- | --- |
|  | 45 | **Level 41 Floor - Shop drawings** |  | 2015-11-24 | 2016-01-10 |  |  |  |  |
| SD-CS-L41-1202 |  | Preparation & Submittals of SD of Communication system Drawings at L41 | 30d | 2015-11-24 | 2015-12-29 | SD-CS-L40-1182 SS+6d | 93d | 0d | Shop Drawings Submittals [60 h] |
| SD-CS-L41-1212 |  | Review & Approval of SD of Communication system Drawings at L41 | 30d | 2015-12-06 | 2016-01-10 | SD-CS-L41-1202 SS+10d, SD-CS-L41-1202 FF+10d | 102d | 43d | Shop Drawings Approval [40 h] |
|  | 46 | **Level 42 Floor - Shop drawings** |  | 2015-12-01 | 2016-01-17 |  |  |  |  |
| SD-CS-L42-1222 |  | Preparation & Submittals of SD of Communication system Drawings at L42 | 30d | 2015-12-01 | 2016-01-05 | SD-CS-L41-1202 SS+6d | 93d | 0d | Shop Drawings Submittals [60 h] |
| SD-CS-L42-1232 |  | Review & Approval of SD of Communication system Drawings at L42 | 30d | 2015-12-13 | 2016-01-17 | SD-CS-L42-1222 SS+10d, SD-CS-L42-1222 FF+10d | 105d | 51d | Shop Drawings Approval [40 h] |
|  | 47 | **Level 43 Floor - Shop drawings** |  | 2015-12-08 | 2016-01-24 |  |  |  |  |
| SD-CS-L43-1242 |  | Preparation & Submittals of SD of Communication system Drawings at L43 | 30d | 2015-12-08 | 2016-01-12 | SD-CS-L42-1222 SS+6d | 93d | 0d | Shop Drawings Submittals [60 h] |
| SD-CS-L43-1252 |  | Review & Approval of SD of Communication system Drawings at L43 | 30d | 2015-12-21 | 2016-01-24 | SD-CS-L43-1242 SS+10d, SD-CS-L43-1242 FF+10d | 99d | 45d | Shop Drawings Approval [40 h] |
|  | 48 | **Level 44 Floor - Shop drawings** |  | 2015-12-15 | 2016-01-31 |  |  |  |  |
| SD-CS-L44-1262 |  | Preparation & Submittals of SD of Communication system Drawings at L44 | 30d | 2015-12-15 | 2016-01-19 | SD-CS-L43-1242 SS+6d | 93d | 0d | Shop Drawings Submittals [60 h] |
| SD-CS-L44-1272 |  | Review & Approval of SD of Communication system Drawings at L44 | 30d | 2015-12-28 | 2016-01-31 | SD-CS-L44-1262 SS+10d, SD-CS-L44-1262 FF+10d | 113d | 59d | Shop Drawings Approval [40 h] |
|  | 49 | **Level 45 Floor - Shop drawings** |  | 2015-12-23 | 2016-02-07 |  |  |  |  |
| SD-CS-L45-1282 |  | Preparation & Submittals of SD of Communication system Drawings at L45 | 30d | 2015-12-23 | 2016-01-26 | SD-CS-L44-1262 SS+6d | 93d | 0d | Shop Drawings Submittals [60 h] |
| SD-CS-L45-1292 |  | Review & Approval of SD of Communication system Drawings at L45 | 30d | 2016-01-04 | 2016-02-07 | SD-CS-L45-1282 SS+10d, SD-CS-L45-1282 FF+10d | 107d | 53d | Shop Drawings Approval [40 h] |
|  | 50 | **Level 46 Floor - Shop drawings** |  | 2015-12-30 | 2016-02-15 |  |  |  |  |
| SD-CS-L46-1302 |  | Preparation & Submittals of SD of Communication system Drawings at L46 | 30d | 2015-12-30 | 2016-02-02 | SD-CS-L45-1282 SS+6d | 93d | 0d | Shop Drawings Submittals [60 h] |
| SD-CS-L46-1312 |  | Review & Approval of SD of Communication system Drawings at L46 | 30d | 2016-01-11 | 2016-02-15 | SD-CS-L46-1302 SS+10d, SD-CS-L46-1302 FF+10d | 101d | 47d | Shop Drawings Approval [40 h] |
|  | 53 | **Level 47 Floor - Shop drawings** |  | 2016-01-06 | 2016-02-22 |  |  |  |  |
| SD-CS-L47-1322 |  | Preparation & Submittals of SD of Communication system Drawings at L47 | 30d | 2016-01-06 | 2016-02-09 | SD-CS-L46-1302 SS+6d | 93d | 0d | Shop Drawings Submittals [60 h] |
| SD-CS-L47-1332 |  | Review & Approval of SD of Communication system Drawings at L47 | 30d | 2016-01-18 | 2016-02-22 | SD-CS-L47-1322 SS+10d, SD-CS-L47-1322 FF+10d | 98d | 43d | Shop Drawings Approval [40 h] |
|  | 51 | **Level 48 Floor - Shop drawings** |  | 2016-01-13 | 2016-02-29 |  |  |  |  |
| SD-CS-L48-1342 |  | Preparation & Submittals of SD of Communication system Drawings at L48 | 30d | 2016-01-13 | 2016-02-17 | SD-CS-L47-1322 SS+6d | 93d | 0d | Shop Drawings Submittals [60 h] |
| SD-CS-L48-1352 |  | Review & Approval of SD of Communication system Drawings at L48 | 30d | 2016-01-25 | 2016-02-29 | SD-CS-L48-1342 SS+10d, SD-CS-L48-1342 FF+10d | 98d | 39d | Shop Drawings Approval [40 h] |

| ID | WBS | Activity | Duration | Start | Finish | Predecessors | Total float | Free float | Resources |
| --- | --- | --- | --- | --- | --- | --- | --- | --- | --- |
|  | 52 | **Level 49 Floor - Shop drawings** |  | 2016-01-20 | 2016-03-07 |  |  |  |  |
| SD-CS-L49-1362 |  | Preparation & Submittals of SD of Communication system Drawings at L49 | 30d | 2016-01-20 | 2016-02-24 | SD-CS-L48-1342 SS+6d | 93d | 0d | Shop Drawings Submittals [60 h] |
| SD-CS-L49-1372 |  | Review & Approval of SD of Communication system Drawings at L49 | 30d | 2016-02-01 | 2016-03-07 | SD-CS-L49-1362 SS+10d, SD-CS-L49-1362 FF+10d | 98d | 44d | Shop Drawings Approval [40 h] |
|  | 54 | **Level 50 Floor - Shop drawings** |  | 2016-01-27 | 2016-03-14 |  |  |  |  |
| SD-CS-L50-1382 |  | Preparation & Submittals of SD of Communication system Drawings at L50 | 30d | 2016-01-27 | 2016-03-02 | SD-CS-L49-1362 SS+6d | 93d | 0d | Shop Drawings Submittals [60 h] |
| SD-CS-L50-1392 |  | Review & Approval of SD of Communication system Drawings at L50 | 30d | 2016-02-08 | 2016-03-14 | SD-CS-L50-1382 SS+10d, SD-CS-L50-1382 FF+10d | 95d | 44d | Shop Drawings Approval [40 h] |
|  | 55 | **Level 51 Floor - Shop drawings** |  | 2016-02-03 | 2016-03-21 |  |  |  |  |
| SD-CS-L51-2102 |  | Preparation & Submittals of SD of Communication system Drawings at L51 | 30d | 2016-02-03 | 2016-03-09 | SD-CS-L50-1382 SS+6d | 93d | 0d | Shop Drawings Submittals [60 h] |
| SD-CS-L51-2112 |  | Review & Approval of SD of Communication system Drawings at L51 | 30d | 2016-02-16 | 2016-03-21 | SD-CS-L51-2102 SS+10d, SD-CS-L51-2102 FF+10d | 93d | 38d | Shop Drawings Approval [40 h] |
|  | 4 | **IP, SMATV & QAM Television System** |  | 2014-11-24 | 2016-01-31 |  |  |  |  |
|  | R | **Basement 3 Floor level - Shop drawings** |  | 2014-11-24 | 2015-01-10 |  |  |  |  |
| SD-CS-B3-802 |  | Preparation & Submittals of SD of IP, SMATV & QAM TV System at B3 | 30d | 2014-11-24 | 2014-12-29 | PQ-CS-C-492 | 120d | 0d | Shop Drawings Submittals [60 h] |
| SD-CS-B3-812 |  | Review & Approval of SD of IP, SMATV & QAM TV System at B3 | 30d | 2014-12-06 | 2015-01-10 | SD-CS-B3-802 SS+10d, SD-CS-B3-802 FF+10d | 415d | 281d | Shop Drawings Approval [40 h] |
|  | 1 | **Basement 2 Floor level - Shop drawings** |  | 2014-12-01 | 2015-01-17 |  |  |  |  |
| SD-CS-B3-782 |  | Preparation & Submittals of SD of IP, SMATV & QAM TV System at B2 | 30d | 2014-12-01 | 2015-01-05 | SD-CS-B3-802 SS+6d | 120d | 0d | Shop Drawings Submittals [60 h] |
| SD-CS-B3-792 |  | Review & Approval of SD of IP, SMATV & QAM TV System at B2 | 30d | 2014-12-13 | 2015-01-17 | SD-CS-B3-782 SS+10d, SD-CS-B3-782 FF+10d | 347d | 295d | Shop Drawings Approval [40 h] |
|  | 2 | **Basement 1 Floor level - Shop drawings** |  | 2014-12-08 | 2015-01-24 |  |  |  |  |
| SD-CS-B2-482 |  | Preparation & Submittals of SD of IP, SMATV & QAM TV System at B1 | 30d | 2014-12-08 | 2015-01-12 | SD-CS-B3-782 SS+6d | 120d | 0d | Shop Drawings Submittals [60 h] |
| SD-CS-B2-492 |  | Review & Approval of SD of IP, SMATV & QAM TV System at B1 | 30d | 2014-12-21 | 2015-01-24 | SD-CS-B2-482 SS+10d, SD-CS-B2-482 FF+10d | 366d | 309d | Shop Drawings Approval [40 h] |
|  | 3 | **Ground Floor level - Shop drawings** |  | 2014-12-15 | 2015-01-31 |  |  |  |  |
| SD-CS-B1-482 |  | Preparation & Submittals of SD of IP, SMATV & QAM TV System at GF | 30d | 2014-12-15 | 2015-01-19 | SD-CS-B2-482 SS+6d, G-CD-003 | 120d | 0d | Shop Drawings Submittals [60 h] |
| SD-CS-B1-492 |  | Review & Approval of SD of IP, SMATV & QAM TV System at GF | 30d | 2014-12-28 | 2015-01-31 | SD-CS-B1-482 SS+10d, SD-CS-B1-482 FF+10d | 171d | 45d | Shop Drawings Approval [40 h] |
|  | 4 | **Mezzanine Floor level - Shop drawings** |  | 2014-12-23 | 2015-02-07 |  |  |  |  |
| SD-CS-GF-482 |  | Preparation & Submittals of SD of IP, SMATV & QAM TV System at ML | 30d | 2014-12-23 | 2015-01-26 | SD-CS-B1-482 SS+6d | 120d | 0d | Shop Drawings Submittals [60 h] |
| SD-CS-GF-492 |  | Review & Approval of SD of IP, SMATV & QAM TV System at ML | 30d | 2015-01-04 | 2015-02-07 | SD-CS-GF-482 SS+10d, SD-CS-GF-482 FF+10d | 185d | 59d | Shop Drawings Approval [40 h] |

| ID | WBS | Activity | Duration | Start | Finish | Predecessors | Total float | Free float | Resources |
| --- | --- | --- | --- | --- | --- | --- | --- | --- | --- |
|  | 5 | **Level 1 Floor - Shop drawings** |  | 2014-12-30 | 2015-02-15 |  |  |  |  |
| SD-CS-L1-502 |  | Preparation & Submittals of SD of IP, SMATV & QAM TV System at L1 | 30d | 2014-12-30 | 2015-02-02 | SD-CS-GF-482 SS+6d | 195d | 0d | Shop Drawings Submittals [60 h] |
| SD-CS-L1-512 |  | Review & Approval of SD of IP, SMATV & QAM TV System at L1 | 30d | 2015-01-11 | 2015-02-15 | SD-CS-L1-502 SS+10d, SD-CS-L1-502 FF+10d | 195d | 73d | Shop Drawings Approval [40 h] |
|  | 6 | **Level 2 Floor - Shop drawings** |  | 2014-12-30 | 2015-02-15 |  |  |  |  |
| SD-CS-L2-522 |  | Preparation & Submittals of SD of IP, SMATV & QAM TV System at L2 | 30d | 2014-12-30 | 2015-02-02 | SD-CS-GF-482 SS+6d | 120d | 0d | Shop Drawings Submittals [60 h] |
| SD-CS-L2-532 |  | Review & Approval of SD of IP, SMATV & QAM TV System at L2 | 30d | 2015-01-11 | 2015-02-15 | SD-CS-L2-522 SS+10d, SD-CS-L2-522 FF+10d | 239d | 113d | Shop Drawings Approval [40 h] |
|  | 7 | **Level 3 Floor - Shop drawings** |  | 2015-01-06 | 2015-02-22 |  |  |  |  |
| SD-CS-L3-542 |  | Preparation & Submittals of SD of IP, SMATV & QAM TV System at L3 | 30d | 2015-01-06 | 2015-02-09 | SD-CS-L2-522 SS+6d | 120d | 0d | Shop Drawings Submittals [60 h] |
| SD-CS-L3-552 |  | Review & Approval of SD of IP, SMATV & QAM TV System at L3 | 30d | 2015-01-18 | 2015-02-22 | SD-CS-L3-542 SS+10d, SD-CS-L3-542 FF+10d | 253d | 127d | Shop Drawings Approval [40 h] |
|  | 8 | **Level 4 Floor - Shop drawings** |  | 2015-01-13 | 2015-03-01 |  |  |  |  |
| SD-CS-L4-1562 |  | Preparation & Submittals of SD of IP, SMATV & QAM TV System at L4 | 30d | 2015-01-13 | 2015-02-17 | SD-CS-L3-542 SS+6d | 120d | 0d | Shop Drawings Submittals [60 h] |
| SD-CS-L4-1572 |  | Review & Approval of SD of IP, SMATV & QAM TV System at L4 | 30d | 2015-01-25 | 2015-03-01 | SD-CS-L4-1562 SS+10d, SD-CS-L4-1562 FF+10d | 247d | 121d | Shop Drawings Approval [40 h] |
|  | 9 | **Level 5 Floor - Shop drawings** |  | 2015-01-20 | 2015-03-08 |  |  |  |  |
| SD-CS-L5-582 |  | Preparation & Submittals of SD of IP, SMATV & QAM TV System at L5 | 30d | 2015-01-20 | 2015-02-24 | SD-CS-L4-1562 SS+6d | 120d | 0d | Shop Drawings Submittals [60 h] |
| SD-CS-L5-592 |  | Review & Approval of SD of IP, SMATV & QAM TV System at L5 | 30d | 2015-02-01 | 2015-03-08 | SD-CS-L5-582 SS+10d, SD-CS-L5-582 FF+10d | 249d | 115d | Shop Drawings Approval [40 h] |
|  | 10 | **Level 6 Floor - Shop drawings** |  | 2015-01-27 | 2015-03-15 |  |  |  |  |
| SD-CS-L6-602 |  | Preparation & Submittals of SD of IP, SMATV & QAM TV System at L6 | 30d | 2015-01-27 | 2015-03-03 | SD-CS-L5-582 SS+6d | 120d | 0d | Shop Drawings Submittals [60 h] |
| SD-CS-L6-612 |  | Review & Approval of SD of IP, SMATV & QAM TV System at L6 | 30d | 2015-02-08 | 2015-03-15 | SD-CS-L6-602 SS+10d, SD-CS-L6-602 FF+10d | 263d | 129d | Shop Drawings Approval [40 h] |
|  | 11 | **Level 7 Floor - Shop drawings** |  | 2015-02-03 | 2015-03-22 |  |  |  |  |
| SD-CS-L7-622 |  | Preparation & Submittals of SD of IP, SMATV & QAM TV System at L7 | 30d | 2015-02-03 | 2015-03-10 | SD-CS-L6-602 SS+6d | 120d | 0d | Shop Drawings Submittals [60 h] |
| SD-CS-L7-632 |  | Review & Approval of SD of IP, SMATV & QAM TV System at L7 | 30d | 2015-02-16 | 2015-03-22 | SD-CS-L7-622 SS+10d, SD-CS-L7-622 FF+10d | 258d | 123d | Shop Drawings Approval [40 h] |
|  | 12 | **Level 8 Floor - Shop drawings** |  | 2015-02-11 | 2015-03-29 |  |  |  |  |
| SD-CS-L8-642 |  | Preparation & Submittals of SD of IP, SMATV & QAM TV System at L8 | 30d | 2015-02-11 | 2015-03-17 | SD-CS-L7-622 SS+6d | 120d | 0d | Shop Drawings Submittals [60 h] |
| SD-CS-L8-652 |  | Review & Approval of SD of IP, SMATV & QAM TV System at L8 | 30d | 2015-02-23 | 2015-03-29 | SD-CS-L8-642 SS+10d, SD-CS-L8-642 FF+10d | 253d | 117d | Shop Drawings Approval [40 h] |

| ID | WBS | Activity | Duration | Start | Finish | Predecessors | Total float | Free float | Resources |
| --- | --- | --- | --- | --- | --- | --- | --- | --- | --- |
|  | 13 | **Level 9 Floor - Shop drawings** |  | 2015-02-18 | 2015-04-05 |  |  |  |  |
| SD-CS-L9-662 |  | Preparation & Submittals of SD of IP, SMATV & QAM TV System at L9 | 30d | 2015-02-18 | 2015-03-24 | SD-CS-L8-642 SS+6d | 120d | 0d | Shop Drawings Submittals [60 h] |
| SD-CS-L9-672 |  | Review & Approval of SD of IP, SMATV & QAM TV System at L9 | 30d | 2015-03-02 | 2015-04-05 | SD-CS-L9-662 SS+10d, SD-CS-L9-662 FF+10d | 247d | 111d | Shop Drawings Approval [40 h] |
|  | 14 | **Level 10 Floor - Shop drawings** |  | 2015-02-25 | 2015-04-12 |  |  |  |  |
| SD-CS-L10-682 |  | Preparation & Submittals of SD of IP, SMATV & QAM TV System at L10 | 30d | 2015-02-25 | 2015-03-31 | SD-CS-L9-662 SS+6d | 120d | 0d | Shop Drawings Submittals [60 h] |
| SD-CS-L10-692 |  | Review & Approval of SD of IP, SMATV & QAM TV System at L10 | 30d | 2015-03-09 | 2015-04-12 | SD-CS-L10-682 SS+10d, SD-CS-L10-682 FF+10d | 241d | 105d | Shop Drawings Approval [40 h] |
|  | 15 | **Level 11 Floor - Shop drawings** |  | 2015-03-04 | 2015-04-19 |  |  |  |  |
| SD-CS-L11-702 |  | Preparation & Submittals of SD of IP, SMATV & QAM TV System at L11 | 30d | 2015-03-04 | 2015-04-07 | SD-CS-L10-682 SS+6d | 120d | 0d | Shop Drawings Submittals [60 h] |
| SD-CS-L11-712 |  | Review & Approval of SD of IP, SMATV & QAM TV System at L11 | 30d | 2015-03-16 | 2015-04-19 | SD-CS-L11-702 SS+10d, SD-CS-L11-702 FF+10d | 235d | 99d | Shop Drawings Approval [40 h] |
|  | 16 | **Level 12 Floor - Shop drawings** |  | 2015-03-11 | 2015-04-26 |  |  |  |  |
| SD-CS-L12-722 |  | Preparation & Submittals of SD of IP, SMATV & QAM TV System at L12 | 30d | 2015-03-11 | 2015-04-14 | SD-CS-L11-702 SS+6d | 120d | 0d | Shop Drawings Submittals [60 h] |
| SD-CS-L12-732 |  | Review & Approval of SD of IP, SMATV & QAM TV System at L12 | 30d | 2015-03-23 | 2015-04-26 | SD-CS-L12-722 SS+10d, SD-CS-L12-722 FF+10d | 229d | 93d | Shop Drawings Approval [40 h] |
|  | 17 | **Level 13 Floor - Shop drawings** |  | 2015-03-18 | 2015-05-03 |  |  |  |  |
| SD-CS-L13-742 |  | Preparation & Submittals of SD of IP, SMATV & QAM TV System at L13 | 30d | 2015-03-18 | 2015-04-21 | SD-CS-L12-722 SS+6d | 120d | 0d | Shop Drawings Submittals [60 h] |
| SD-CS-L13-752 |  | Review & Approval of SD of IP, SMATV & QAM TV System at L13 | 30d | 2015-03-30 | 2015-05-03 | SD-CS-L13-742 SS+10d, SD-CS-L13-742 FF+10d | 243d | 107d | Shop Drawings Approval [40 h] |
|  | 18 | **Level 14 Floor - Shop drawings** |  | 2015-03-25 | 2015-05-10 |  |  |  |  |
| SD-CS-L14-762 |  | Preparation & Submittals of SD of IP, SMATV & QAM TV System at L14 | 30d | 2015-03-25 | 2015-04-28 | SD-CS-L13-742 SS+6d | 120d | 0d | Shop Drawings Submittals [60 h] |
| SD-CS-L14-772 |  | Review & Approval of SD of IP, SMATV & QAM TV System at L14 | 30d | 2015-04-06 | 2015-05-10 | SD-CS-L14-762 SS+10d, SD-CS-L14-762 FF+10d | 237d | 101d | Shop Drawings Approval [40 h] |
|  | 19 | **Level 15 Floor - Shop drawings** |  | 2015-04-01 | 2015-05-17 |  |  |  |  |
| SD-CS-L15-782 |  | Preparation & Submittals of SD of IP, SMATV & QAM TV System at L15 | 30d | 2015-04-01 | 2015-05-05 | SD-CS-L14-762 SS+6d | 120d | 0d | Shop Drawings Submittals [60 h] |
| SD-CS-L15-792 |  | Review & Approval of SD of IP, SMATV & QAM TV System at L15 | 30d | 2015-04-13 | 2015-05-17 | SD-CS-L15-782 SS+10d, SD-CS-L15-782 FF+10d | 231d | 95d | Shop Drawings Approval [40 h] |
|  | 20 | **Level 16 Floor - Shop drawings** |  | 2015-04-08 | 2015-05-24 |  |  |  |  |
| SD-CS-L16-802 |  | Preparation & Submittals of SD of IP, SMATV & QAM TV System at L16 | 30d | 2015-04-08 | 2015-05-12 | SD-CS-L15-782 SS+6d | 120d | 0d | Shop Drawings Submittals [60 h] |
| SD-CS-L16-812 |  | Review & Approval of SD of IP, SMATV & QAM TV System at L16 | 30d | 2015-04-20 | 2015-05-24 | SD-CS-L16-802 SS+10d, SD-CS-L16-802 FF+10d | 225d | 89d | Shop Drawings Approval [40 h] |

| ID | WBS | Activity | Duration | Start | Finish | Predecessors | Total float | Free float | Resources |
| --- | --- | --- | --- | --- | --- | --- | --- | --- | --- |
|  | 21 | **Level 17 Floor - Shop drawings** |  | 2015-04-15 | 2015-05-31 |  |  |  |  |
| SD-CS-L17-1582 |  | Preparation & Submittals of SD of IP, SMATV & QAM TV System at L17 | 30d | 2015-04-15 | 2015-05-19 | SD-CS-L16-802 SS+6d | 120d | 0d | Shop Drawings Submittals [60 h] |
| SD-CS-L17-1592 |  | Review & Approval of SD of IP, SMATV & QAM TV System at L17 | 30d | 2015-04-27 | 2015-05-31 | SD-CS-L17-1582 SS+10d, SD-CS-L17-1582 FF+10d | 219d | 83d | Shop Drawings Approval [40 h] |
|  | 22 | **Level 18 Floor - Shop drawings** |  | 2015-04-22 | 2015-06-07 |  |  |  |  |
| SD-CS-L18-842 |  | Preparation & Submittals of SD of IP, SMATV & QAM TV System at L18 | 30d | 2015-04-22 | 2015-05-26 | SD-CS-L17-1582 SS+6d | 120d | 0d | Shop Drawings Submittals [60 h] |
| SD-CS-L18-852 |  | Review & Approval of SD of IP, SMATV & QAM TV System at L18 | 30d | 2015-05-04 | 2015-06-07 | SD-CS-L18-842 SS+10d, SD-CS-L18-842 FF+10d | 213d | 79d | Shop Drawings Approval [40 h] |
|  | 23 | **Level 19 Floor - Shop drawings** |  | 2015-04-29 | 2015-06-14 |  |  |  |  |
| SD-CS-L19-862 |  | Preparation & Submittals of SD of IP, SMATV & QAM TV System at L19 | 30d | 2015-04-29 | 2015-06-02 | SD-CS-L18-842 SS+6d | 120d | 0d | Shop Drawings Submittals [60 h] |
| SD-CS-L19-872 |  | Review & Approval of SD of IP, SMATV & QAM TV System at L19 | 30d | 2015-05-11 | 2015-06-14 | SD-CS-L19-862 SS+10d, SD-CS-L19-862 FF+10d | 207d | 80d | Shop Drawings Approval [40 h] |
|  | 24 | **Level 20 Floor - Shop drawings** |  | 2015-05-06 | 2015-06-21 |  |  |  |  |
| SD-CS-L20-882 |  | Preparation & Submittals of SD of IP, SMATV & QAM TV System at L20 | 30d | 2015-05-06 | 2015-06-09 | SD-CS-L19-862 SS+6d | 120d | 0d | Shop Drawings Submittals [60 h] |
| SD-CS-L20-892 |  | Review & Approval of SD of IP, SMATV & QAM TV System at L20 | 30d | 2015-05-18 | 2015-06-21 | SD-CS-L20-882 SS+10d, SD-CS-L20-882 FF+10d | 201d | 81d | Shop Drawings Approval [40 h] |
|  | 25 | **Level 21 Floor - Shop drawings** |  | 2015-05-13 | 2015-06-28 |  |  |  |  |
| SD-CS-L21-902 |  | Preparation & Submittals of SD of IP, SMATV & QAM TV System at L21 | 30d | 2015-05-13 | 2015-06-16 | SD-CS-L20-882 SS+6d | 120d | 0d | Shop Drawings Submittals [60 h] |
| SD-CS-L21-912 |  | Review & Approval of SD of IP, SMATV & QAM TV System at L21 | 30d | 2015-05-25 | 2015-06-28 | SD-CS-L21-902 SS+10d, SD-CS-L21-902 FF+10d | 195d | 89d | Shop Drawings Approval [40 h] |
|  | 26 | **Level 22 Floor - Shop drawings** |  | 2015-05-20 | 2015-07-05 |  |  |  |  |
| SD-CS-L22-922 |  | Preparation & Submittals of SD of IP, SMATV & QAM TV System at L22 | 30d | 2015-05-20 | 2015-06-23 | SD-CS-L21-902 SS+6d | 120d | 0d | Shop Drawings Submittals [60 h] |
| SD-CS-L22-932 |  | Review & Approval of SD of IP, SMATV & QAM TV System at L22 | 30d | 2015-06-01 | 2015-07-05 | SD-CS-L22-922 SS+10d, SD-CS-L22-922 FF+10d | 209d | 103d | Shop Drawings Approval [40 h] |
|  | 27 | **Level 23 Floor - Shop drawings** |  | 2015-05-27 | 2015-07-12 |  |  |  |  |
| SD-CS-L23-942 |  | Preparation & Submittals of SD of IP, SMATV & QAM TV System at L23 | 30d | 2015-05-27 | 2015-06-30 | SD-CS-L22-922 SS+6d | 120d | 0d | Shop Drawings Submittals [60 h] |
| SD-CS-L23-952 |  | Review & Approval of SD of IP, SMATV & QAM TV System at L23 | 30d | 2015-06-08 | 2015-07-12 | SD-CS-L23-942 SS+10d, SD-CS-L23-942 FF+10d | 203d | 97d | Shop Drawings Approval [40 h] |
|  | 28 | **Level 24 Floor - Shop drawings** |  | 2015-06-03 | 2015-07-21 |  |  |  |  |
| SD-CS-L24-962 |  | Preparation & Submittals of SD of IP, SMATV & QAM TV System at L24 | 30d | 2015-06-03 | 2015-07-07 | SD-CS-L23-942 SS+6d | 120d | 0d | Shop Drawings Submittals [60 h] |
| SD-CS-L24-972 |  | Review & Approval of SD of IP, SMATV & QAM TV System at L24 | 30d | 2015-06-15 | 2015-07-21 | SD-CS-L24-962 SS+10d, SD-CS-L24-962 FF+10d | 197d | 91d | Shop Drawings Approval [40 h] |

| ID | WBS | Activity | Duration | Start | Finish | Predecessors | Total float | Free float | Resources |
| --- | --- | --- | --- | --- | --- | --- | --- | --- | --- |
|  | 29 | **Level 25 Floor - Shop drawings** |  | 2015-06-10 | 2015-07-28 |  |  |  |  |
| SD-CS-L25-982 |  | Preparation & Submittals of SD of IP, SMATV & QAM TV System at L25 | 30d | 2015-06-10 | 2015-07-14 | SD-CS-L24-962 SS+6d | 120d | 0d | Shop Drawings Submittals [60 h] |
| SD-CS-L25-992 |  | Review & Approval of SD of IP, SMATV & QAM TV System at L25 | 30d | 2015-06-22 | 2015-07-28 | SD-CS-L25-982 SS+10d, SD-CS-L25-982 FF+10d | 191d | 85d | Shop Drawings Approval [40 h] |
|  | 30 | **Level 26 Floor - Shop drawings** |  | 2015-06-17 | 2015-08-04 |  |  |  |  |
| SD-CS-L26-1002 |  | Preparation & Submittals of SD of IP, SMATV & QAM TV System at L26 | 30d | 2015-06-17 | 2015-07-23 | SD-CS-L25-982 SS+6d | 120d | 0d | Shop Drawings Submittals [60 h] |
| SD-CS-L26-1012 |  | Review & Approval of SD of IP, SMATV & QAM TV System at L26 | 30d | 2015-06-29 | 2015-08-04 | SD-CS-L26-1002 SS+10d, SD-CS-L26-1002 FF+10d | 185d | 82d | Shop Drawings Approval [40 h] |
|  | 31 | **Level 27 Floor - Shop drawings** |  | 2015-06-24 | 2015-08-11 |  |  |  |  |
| SD-CS-L27-1022 |  | Preparation & Submittals of SD of IP, SMATV & QAM TV System at L27 | 30d | 2015-06-24 | 2015-07-30 | SD-CS-L26-1002 SS+6d | 120d | 0d | Shop Drawings Submittals [60 h] |
| SD-CS-L27-1032 |  | Review & Approval of SD of IP, SMATV & QAM TV System at L27 | 30d | 2015-07-06 | 2015-08-11 | SD-CS-L27-1022 SS+10d, SD-CS-L27-1022 FF+10d | 179d | 82d | Shop Drawings Approval [40 h] |
|  | 32 | **Level 28 Floor - Shop drawings** |  | 2015-07-01 | 2015-08-18 |  |  |  |  |
| SD-CS-L28-1042 |  | Preparation & Submittals of SD of IP, SMATV & QAM TV System at L28 | 30d | 2015-07-01 | 2015-08-06 | SD-CS-L27-1022 SS+6d | 120d | 0d | Shop Drawings Submittals [60 h] |
| SD-CS-L28-1052 |  | Review & Approval of SD of IP, SMATV & QAM TV System at L28 | 30d | 2015-07-13 | 2015-08-18 | SD-CS-L28-1042 SS+10d, SD-CS-L28-1042 FF+10d | 173d | 90d | Shop Drawings Approval [40 h] |
|  | 33 | **Level 29 Floor - Shop drawings** |  | 2015-07-08 | 2015-08-25 |  |  |  |  |
| SD-CS-L29-1062 |  | Preparation & Submittals of SD of IP, SMATV & QAM TV System at L29 | 30d | 2015-07-08 | 2015-08-13 | SD-CS-L28-1042 SS+6d | 120d | 0d | Shop Drawings Submittals [60 h] |
| SD-CS-L29-1072 |  | Review & Approval of SD of IP, SMATV & QAM TV System at L29 | 30d | 2015-07-22 | 2015-08-25 | SD-CS-L29-1062 SS+10d, SD-CS-L29-1062 FF+10d | 187d | 104d | Shop Drawings Approval [40 h] |
|  | 34 | **Level 30 Floor - Shop drawings** |  | 2015-07-18 | 2015-09-01 |  |  |  |  |
| SD-CS-L30-1082 |  | Preparation & Submittals of SD of IP, SMATV & QAM TV System at L30 | 30d | 2015-07-18 | 2015-08-20 | SD-CS-L29-1062 SS+6d | 120d | 0d | Shop Drawings Submittals [60 h] |
| SD-CS-L30-1092 |  | Review & Approval of SD of IP, SMATV & QAM TV System at L30 | 30d | 2015-07-29 | 2015-09-01 | SD-CS-L30-1082 SS+10d, SD-CS-L30-1082 FF+10d | 181d | 98d | Shop Drawings Approval [40 h] |
|  | 35 | **Level 31 Floor - Shop drawings** |  | 2015-07-25 | 2015-09-08 |  |  |  |  |
| SD-CS-L31-1102 |  | Preparation & Submittals of SD of IP, SMATV & QAM TV System at L31 | 30d | 2015-07-25 | 2015-08-27 | SD-CS-L30-1082 SS+6d | 120d | 0d | Shop Drawings Submittals [60 h] |
| SD-CS-L31-1112 |  | Review & Approval of SD of IP, SMATV & QAM TV System at L31 | 30d | 2015-08-05 | 2015-09-08 | SD-CS-L31-1102 SS+10d, SD-CS-L31-1102 FF+10d | 175d | 92d | Shop Drawings Approval [40 h] |
|  | 36 | **Level 32 Floor - Shop drawings** |  | 2015-08-01 | 2015-09-15 |  |  |  |  |
| SD-CS-L32-1122 |  | Preparation & Submittals of SD of IP, SMATV & QAM TV System at L32 | 30d | 2015-08-01 | 2015-09-03 | SD-CS-L31-1102 SS+6d | 120d | 0d | Shop Drawings Submittals [60 h] |
| SD-CS-L32-1132 |  | Review & Approval of SD of IP, SMATV & QAM TV System at L32 | 30d | 2015-08-12 | 2015-09-15 | SD-CS-L32-1122 SS+10d, SD-CS-L32-1122 FF+10d | 169d | 86d | Shop Drawings Approval [40 h] |

| ID | WBS | Activity | Duration | Start | Finish | Predecessors | Total float | Free float | Resources |
| --- | --- | --- | --- | --- | --- | --- | --- | --- | --- |
|  | 37 | **Level 33 Floor - Shop drawings** |  | 2015-08-08 | 2015-09-26 |  |  |  |  |
| SD-CS-L33-1142 |  | Preparation & Submittals of SD of IP, SMATV & QAM TV System at L33 | 30d | 2015-08-08 | 2015-09-10 | SD-CS-L32-1122 SS+6d | 120d | 0d | Shop Drawings Submittals [60 h] |
| SD-CS-L33-1152 |  | Review & Approval of SD of IP, SMATV & QAM TV System at L33 | 30d | 2015-08-19 | 2015-09-26 | SD-CS-L33-1142 SS+10d, SD-CS-L33-1142 FF+10d | 163d | 85d | Shop Drawings Approval [40 h] |
|  | 38 | **Level 34 Floor - Shop drawings** |  | 2015-08-15 | 2015-10-03 |  |  |  |  |
| SD-CS-L34-1162 |  | Preparation & Submittals of SD of IP, SMATV & QAM TV System at L34 | 30d | 2015-08-15 | 2015-09-17 | SD-CS-L33-1142 SS+6d | 120d | 0d | Shop Drawings Submittals [60 h] |
| SD-CS-L34-1172 |  | Review & Approval of SD of IP, SMATV & QAM TV System at L34 | 30d | 2015-08-26 | 2015-10-03 | SD-CS-L34-1162 SS+10d, SD-CS-L34-1162 FF+10d | 157d | 85d | Shop Drawings Approval [40 h] |
|  | 39 | **Level 35 Floor - Shop drawings** |  | 2015-08-22 | 2015-10-10 |  |  |  |  |
| SD-CS-L35-1182 |  | Preparation & Submittals of SD of IP, SMATV & QAM TV System at L35 | 30d | 2015-08-22 | 2015-09-28 | SD-CS-L34-1162 SS+6d | 120d | 0d | Shop Drawings Submittals [60 h] |
| SD-CS-L35-1192 |  | Review & Approval of SD of IP, SMATV & QAM TV System at L35 | 30d | 2015-09-02 | 2015-10-10 | SD-CS-L35-1182 SS+10d, SD-CS-L35-1182 FF+10d | 171d | 99d | Shop Drawings Approval [40 h] |
|  | 40 | **Level 36 Floor - Shop drawings** |  | 2015-08-29 | 2015-10-17 |  |  |  |  |
| SD-CS-L36-1202 |  | Preparation & Submittals of SD of IP, SMATV & QAM TV System at L36 | 30d | 2015-08-29 | 2015-10-05 | SD-CS-L35-1182 SS+6d | 120d | 0d | Shop Drawings Submittals [60 h] |
| SD-CS-L36-1212 |  | Review & Approval of SD of IP, SMATV & QAM TV System at L36 | 30d | 2015-09-09 | 2015-10-17 | SD-CS-L36-1202 SS+10d, SD-CS-L36-1202 FF+10d | 165d | 93d | Shop Drawings Approval [40 h] |
|  | 41 | **Level 37 Floor - Shop drawings** |  | 2015-09-05 | 2015-10-24 |  |  |  |  |
| SD-CS-L37-1222 |  | Preparation & Submittals of SD of IP, SMATV & QAM TV System at L37 | 30d | 2015-09-05 | 2015-10-12 | SD-CS-L36-1202 SS+6d | 120d | 0d | Shop Drawings Submittals [60 h] |
| SD-CS-L37-1232 |  | Review & Approval of SD of IP, SMATV & QAM TV System at L37 | 30d | 2015-09-16 | 2015-10-24 | SD-CS-L37-1222 SS+10d, SD-CS-L37-1222 FF+10d | 159d | 87d | Shop Drawings Approval [40 h] |
|  | 42 | **Level 38 Floor - Shop drawings** |  | 2015-09-12 | 2015-10-31 |  |  |  |  |
| SD-CS-L38-1242 |  | Preparation & Submittals of SD of IP, SMATV & QAM TV System at L38 | 30d | 2015-09-12 | 2015-10-19 | SD-CS-L37-1222 SS+6d | 120d | 0d | Shop Drawings Submittals [60 h] |
| SD-CS-L38-1252 |  | Review & Approval of SD of IP, SMATV & QAM TV System at L38 | 30d | 2015-09-27 | 2015-10-31 | SD-CS-L38-1242 SS+10d, SD-CS-L38-1242 FF+10d | 153d | 85d | Shop Drawings Approval [40 h] |
|  | 43 | **Level 39 Floor - Shop drawings** |  | 2015-09-19 | 2015-11-07 |  |  |  |  |
| SD-CS-L39-1262 |  | Preparation & Submittals of SD of IP, SMATV & QAM TV System at L39 | 30d | 2015-09-19 | 2015-10-26 | SD-CS-L38-1242 SS+6d | 120d | 0d | Shop Drawings Submittals [60 h] |
| SD-CS-L39-1272 |  | Review & Approval of SD of IP, SMATV & QAM TV System at L39 | 30d | 2015-10-04 | 2015-11-07 | SD-CS-L39-1262 SS+10d, SD-CS-L39-1262 FF+10d | 147d | 93d | Shop Drawings Approval [40 h] |
|  | 44 | **Level 40 Floor - Shop drawings** |  | 2015-09-29 | 2015-11-14 |  |  |  |  |
| SD-CS-L40-1282 |  | Preparation & Submittals of SD of IP, SMATV & QAM TV System at L40 | 30d | 2015-09-29 | 2015-11-02 | SD-CS-L39-1262 SS+6d | 120d | 0d | Shop Drawings Submittals [60 h] |
| SD-CS-L40-1292 |  | Review & Approval of SD of IP, SMATV & QAM TV System at L40 | 30d | 2015-10-11 | 2015-11-14 | SD-CS-L40-1282 SS+10d, SD-CS-L40-1282 FF+10d | 141d | 87d | Shop Drawings Approval [40 h] |

| ID | WBS | Activity | Duration | Start | Finish | Predecessors | Total float | Free float | Resources |
| --- | --- | --- | --- | --- | --- | --- | --- | --- | --- |
|  | 45 | **Level 41 Floor - Shop drawings** |  | 2015-10-06 | 2015-11-21 |  |  |  |  |
| SD-CS-L41-1302 |  | Preparation & Submittals of SD of IP, SMATV & QAM TV System at L41 | 30d | 2015-10-06 | 2015-11-09 | SD-CS-L40-1282 SS+6d | 120d | 0d | Shop Drawings Submittals [60 h] |
| SD-CS-L41-1312 |  | Review & Approval of SD of IP, SMATV & QAM TV System at L41 | 30d | 2015-10-18 | 2015-11-21 | SD-CS-L41-1302 SS+10d, SD-CS-L41-1302 FF+10d | 135d | 85d | Shop Drawings Approval [40 h] |
|  | 46 | **Level 42 Floor - Shop drawings** |  | 2015-10-13 | 2015-11-28 |  |  |  |  |
| SD-CS-L42-1322 |  | Preparation & Submittals of SD of IP, SMATV & QAM TV System at L42 | 30d | 2015-10-13 | 2015-11-16 | SD-CS-L41-1302 SS+6d | 120d | 0d | Shop Drawings Submittals [60 h] |
| SD-CS-L42-1332 |  | Review & Approval of SD of IP, SMATV & QAM TV System at L42 | 30d | 2015-10-25 | 2015-11-28 | SD-CS-L42-1322 SS+10d, SD-CS-L42-1322 FF+10d | 129d | 93d | Shop Drawings Approval [40 h] |
|  | 47 | **Level 43 Floor - Shop drawings** |  | 2015-10-20 | 2015-12-05 |  |  |  |  |
| SD-CS-L43-1342 |  | Preparation & Submittals of SD of IP, SMATV & QAM TV System at L43 | 30d | 2015-10-20 | 2015-11-23 | SD-CS-L42-1322 SS+6d | 120d | 0d | Shop Drawings Submittals [60 h] |
| SD-CS-L43-1352 |  | Review & Approval of SD of IP, SMATV & QAM TV System at L43 | 30d | 2015-11-01 | 2015-12-05 | SD-CS-L43-1342 SS+10d, SD-CS-L43-1342 FF+10d | 143d | 107d | Shop Drawings Approval [40 h] |
|  | 48 | **Level 44 Floor - Shop drawings** |  | 2015-10-27 | 2015-12-12 |  |  |  |  |
| SD-CS-L44-1362 |  | Preparation & Submittals of SD of IP, SMATV & QAM TV System at L44 | 30d | 2015-10-27 | 2015-11-30 | SD-CS-L43-1342 SS+6d | 120d | 0d | Shop Drawings Submittals [60 h] |
| SD-CS-L44-1372 |  | Review & Approval of SD of IP, SMATV & QAM TV System at L44 | 30d | 2015-11-08 | 2015-12-12 | SD-CS-L44-1362 SS+10d, SD-CS-L44-1362 FF+10d | 156d | 101d | Shop Drawings Approval [40 h] |
|  | 49 | **Level 45 Floor - Shop drawings** |  | 2015-11-03 | 2015-12-20 |  |  |  |  |
| SD-CS-L45-1382 |  | Preparation & Submittals of SD of IP, SMATV & QAM TV System at L45 | 30d | 2015-11-03 | 2015-12-07 | SD-CS-L44-1362 SS+6d | 120d | 0d | Shop Drawings Submittals [60 h] |
| SD-CS-L45-1392 |  | Review & Approval of SD of IP, SMATV & QAM TV System at L45 | 30d | 2015-11-15 | 2015-12-20 | SD-CS-L45-1382 SS+10d, SD-CS-L45-1382 FF+10d | 150d | 95d | Shop Drawings Approval [40 h] |
|  | 50 | **Level 46 Floor - Shop drawings** |  | 2015-11-10 | 2015-12-27 |  |  |  |  |
| SD-CS-L46-1402 |  | Preparation & Submittals of SD of IP, SMATV & QAM TV System at L46 | 30d | 2015-11-10 | 2015-12-14 | SD-CS-L45-1382 SS+6d | 120d | 0d | Shop Drawings Submittals [60 h] |
| SD-CS-L46-1412 |  | Review & Approval of SD of IP, SMATV & QAM TV System at L46 | 30d | 2015-11-22 | 2015-12-27 | SD-CS-L46-1402 SS+10d, SD-CS-L46-1402 FF+10d | 144d | 89d | Shop Drawings Approval [40 h] |
|  | 53 | **Level 47 Floor - Shop drawings** |  | 2015-11-17 | 2016-01-03 |  |  |  |  |
| SD-CS-L47-1422 |  | Preparation & Submittals of SD of IP, SMATV & QAM TV System at L47 | 30d | 2015-11-17 | 2015-12-22 | SD-CS-L46-1402 SS+6d | 120d | 0d | Shop Drawings Submittals [60 h] |
| SD-CS-L47-1432 |  | Review & Approval of SD of IP, SMATV & QAM TV System at L47 | 30d | 2015-11-29 | 2016-01-03 | SD-CS-L47-1422 SS+10d, SD-CS-L47-1422 FF+10d | 138d | 85d | Shop Drawings Approval [40 h] |
|  | 51 | **Level 48 Floor - Shop drawings** |  | 2015-11-24 | 2016-01-10 |  |  |  |  |
| SD-CS-L48-1442 |  | Preparation & Submittals of SD of IP, SMATV & QAM TV System at L48 | 30d | 2015-11-24 | 2015-12-29 | SD-CS-L47-1422 SS+6d | 120d | 0d | Shop Drawings Submittals [60 h] |
| SD-CS-L48-1452 |  | Review & Approval of SD of IP, SMATV & QAM TV System at L48 | 30d | 2015-12-06 | 2016-01-10 | SD-CS-L48-1442 SS+10d, SD-CS-L48-1442 FF+10d | 132d | 80d | Shop Drawings Approval [40 h] |

| ID | WBS | Activity | Duration | Start | Finish | Predecessors | Total float | Free float | Resources |
| --- | --- | --- | --- | --- | --- | --- | --- | --- | --- |
|  | 52 | **Level 49 Floor - Shop drawings** |  | 2015-12-01 | 2016-01-17 |  |  |  |  |
| SD-CS-L49-1462 |  | Preparation & Submittals of SD of IP, SMATV & QAM TV System at L49 | 30d | 2015-12-01 | 2016-01-05 | SD-CS-L48-1442 SS+6d | 120d | 0d | Shop Drawings Submittals [60 h] |
| SD-CS-L49-1472 |  | Review & Approval of SD of IP, SMATV & QAM TV System at L49 | 30d | 2015-12-13 | 2016-01-17 | SD-CS-L49-1462 SS+10d, SD-CS-L49-1462 FF+10d | 126d | 86d | Shop Drawings Approval [40 h] |
|  | 54 | **Level 50 Floor - Shop drawings** |  | 2015-12-08 | 2016-01-24 |  |  |  |  |
| SD-CS-L50-1482 |  | Preparation & Submittals of SD of IP, SMATV & QAM TV System at L50 | 30d | 2015-12-08 | 2016-01-12 | SD-CS-L49-1462 SS+6d | 120d | 0d | Shop Drawings Submittals [60 h] |
| SD-CS-L50-1492 |  | Review & Approval of SD of IP, SMATV & QAM TV System at L50 | 30d | 2015-12-21 | 2016-01-24 | SD-CS-L50-1482 SS+10d, SD-CS-L50-1482 FF+10d | 120d | 86d | Shop Drawings Approval [40 h] |
|  | 55 | **Level 51 Floor - Shop drawings** |  | 2015-12-15 | 2016-01-31 |  |  |  |  |
| SD-CS-L51-2402 |  | Preparation & Submittals of SD of IP, SMATV & QAM TV System at L51 | 30d | 2015-12-15 | 2016-01-19 | SD-CS-L50-1482 SS+6d | 134d | 0d | Shop Drawings Submittals [60 h] |
| SD-CS-L51-2412 |  | Review & Approval of SD of IP, SMATV & QAM TV System at L51 | 30d | 2015-12-28 | 2016-01-31 | SD-CS-L51-2402 SS+10d, SD-CS-L51-2402 FF+10d | 134d | 100d | Shop Drawings Approval [40 h] |
|  | 6 | **Lifts & Escalators** |  | 2014-11-05 | 2015-10-05 |  |  |  |  |
|  | 1 | **Hotel Passenger lifts** |  | 2014-11-05 | 2014-12-22 |  |  |  |  |
| SD-CS-B3-862 |  | Preparation & Submittals of SD of Hotel Passenger Lift | 30d | 2014-11-05 | 2014-12-09 | PQ-CS-C-572 | 216d | 0d | Shop Drawings Submittals [60 h] |
| SD-CS-B3-872 |  | Review & Approval of SD of Hotel Passenger Lift | 30d | 2014-11-17 | 2014-12-22 | SD-CS-B3-862 SS+10d, SD-CS-B3-862 FF+10d | 216d | 0d | Shop Drawings Approval [40 h] |
|  | 2 | **Apartment Passenger lifts** |  | 2014-12-10 | 2015-01-26 |  |  |  |  |
| SD-CS-B3-882 |  | Preparation & Submittals of SD of Apartment Passenger Lift | 30d | 2014-12-10 | 2015-01-14 | PQ-CS-C-572, SD-CS-B3-862 | 229d | 0d | Shop Drawings Submittals [60 h] |
| SD-CS-B3-892 |  | Review & Approval of SD of of Apartment Passenger Lift | 30d | 2014-12-23 | 2015-01-26 | SD-CS-B3-882 SS+10d, SD-CS-B3-882 FF+10d | 308d | 0d | Shop Drawings Approval [40 h] |
|  | 3 | **Service lifts** |  | 2015-01-15 | 2015-03-03 |  |  |  |  |
| SD-CS-B3-902 |  | Preparation & Submittals of SD of Service Lift | 30d | 2015-01-15 | 2015-02-19 | PQ-CS-C-572, SD-CS-B3-882 | 229d | 0d | Shop Drawings Submittals [60 h] |
| SD-CS-B3-912 |  | Review & Approval of SD of Service Lift | 30d | 2015-01-27 | 2015-03-03 | SD-CS-B3-902 SS+10d, SD-CS-B3-902 FF+10d | 229d | 0d | Shop Drawings Approval [40 h] |
|  | 4 | **Firemans lifts/ Freight lifts** |  | 2015-02-21 | 2015-04-07 |  |  |  |  |
| SD-CS-B3-922 |  | Preparation & Submittals of SD of Firemans Lifts / Freight Lifts | 30d | 2015-02-21 | 2015-03-26 | PQ-CS-C-572, SD-CS-B3-902 | 240d | 0d | Shop Drawings Submittals [60 h] |
| SD-CS-B3-932 |  | Review & Approval of SD of Firemans Lifts / Freight Lifts | 30d | 2015-03-04 | 2015-04-07 | SD-CS-B3-922 SS+10d, SD-CS-B3-922 FF+10d | 248d | 0d | Shop Drawings Approval [40 h] |
|  | 5 | **Garbage lift** |  | 2015-03-28 | 2015-05-12 |  |  |  |  |
| SD-CS-B3-942 |  | Preparation & Submittals of SD of Garbage Lift | 30d | 2015-03-28 | 2015-04-30 | PQ-CS-C-572, SD-CS-B3-922 | 240d | 0d | Shop Drawings Submittals [60 h] |
| SD-CS-B3-952 |  | Review & Approval of SD of Garbage Lift | 30d | 2015-04-08 | 2015-05-12 | SD-CS-B3-942 SS+10d, SD-CS-B3-942 FF+10d | 300d | 0d | Shop Drawings Approval [40 h] |

| ID | WBS | Activity | Duration | Start | Finish | Predecessors | Total float | Free float | Resources |
| --- | --- | --- | --- | --- | --- | --- | --- | --- | --- |
|  | 6 | **Panaromic Lift** |  | 2015-05-02 | 2015-06-16 |  |  |  |  |
| SD-CS-B3-962 |  | Preparation & Submittals of SD of Panaromic Lift | 30d | 2015-05-02 | 2015-06-04 | PQ-CS-C-572, SD-CS-B3-942 | 240d | 0d | Shop Drawings Submittals [60 h] |
| SD-CS-B3-972 |  | Review & Approval of SD of of Panaromic Lift | 30d | 2015-05-13 | 2015-06-16 | SD-CS-B3-962 SS+10d, SD-CS-B3-962 FF+10d | 240d | 0d | Shop Drawings Approval [40 h] |
|  | 7 | **Amenities Lifts** |  | 2015-06-06 | 2015-07-23 |  |  |  |  |
| SD-CS-B3-982 |  | Preparation & Submittals of SD of Amenities Lift | 30d | 2015-06-06 | 2015-07-09 | PQ-CS-C-572, SD-CS-B3-962 | 264d | 0d | Shop Drawings Submittals [60 h] |
| SD-CS-B3-992 |  | Review & Approval of SD of Amenities Lift | 30d | 2015-06-17 | 2015-07-23 | SD-CS-B3-982 SS+10d, SD-CS-B3-982 FF+10d | 264d | 0d | Shop Drawings Approval [40 h] |
|  | 8 | **Hydraulic Lift** |  | 2015-07-11 | 2015-08-27 |  |  |  |  |
| SD-CS-B3-1002 |  | Preparation & Submittals of SD of Hydraulic Lift | 30d | 2015-07-11 | 2015-08-16 | PQ-CS-C-572, SD-CS-B3-982 | 281d | 0d | Shop Drawings Submittals [60 h] |
| SD-CS-B3-1012 |  | Review & Approval of SD of Hydraulic Lift | 30d | 2015-07-25 | 2015-08-27 | SD-CS-B3-1002 SS+10d, SD-CS-B3-1002 FF+10d | 281d | 0d | Shop Drawings Approval [40 h] |
|  | 9 | **Escalators** |  | 2015-08-17 | 2015-10-05 |  |  |  |  |
| SD-CS-B3-1022 |  | Preparation & Submittals of SD of Escalaotrs | 30d | 2015-08-17 | 2015-09-23 | PQ-CS-C-572, SD-CS-B3-1002 | 402d | 0d | Shop Drawings Submittals [60 h] |
| SD-CS-B3-1032 |  | Review & Approval of SD of Escalaotrs | 30d | 2015-08-29 | 2015-10-05 | SD-CS-B3-1022 SS+10d, SD-CS-B3-1022 FF+10d | 402d | 400d | Shop Drawings Approval [40 h] |
|  | 7 | **Specialistes & Specialist Equipments** |  | 2015-01-15 | 2015-10-05 |  |  |  |  |
|  | 1 | **Linen Chute** |  | 2015-01-15 | 2015-03-03 |  |  |  |  |
| SD-CS-B3-1042 |  | Preparation & Submittals of SD of Linen Chute | 30d | 2015-01-15 | 2015-02-19 | PQ-CS-C-552 | 260d | 0d | Shop Drawings Submittals [60 h] |
| SD-CS-B3-1052 |  | Review & Approval of SD of Linen Chute | 30d | 2015-01-27 | 2015-03-03 | SD-CS-B3-1042 SS+10d, SD-CS-B3-1042 FF+10d | 354d | 330d | Shop Drawings Approval [40 h] |
|  | 2 | **BMU - Building Maintenance Unit** |  | 2015-03-28 | 2015-05-12 |  |  |  |  |
| SD-CS-B3-1062 |  | Preparation & Submittals of SD of BMU | 30d | 2015-03-28 | 2015-04-30 | PQ-CS-C-592 | 155d | 0d | Shop Drawings Submittals [60 h] |
| SD-CS-B3-1072 |  | Review & Approval of SD of BMU | 30d | 2015-04-08 | 2015-05-12 | SD-CS-B3-1062 SS+10d, SD-CS-B3-1062 FF+10d | 155d | 102d | Shop Drawings Approval [40 h] |
|  | 3 | **Swimming Pools** |  | 2015-06-06 | 2015-10-05 |  |  |  |  |
|  | 4 | **Main Resident Pool** |  | 2015-06-06 | 2015-07-23 |  |  |  |  |
| SD-CS-B3-1082 |  | Preparation & Submittals of SD of Main Resident Pool | 30d | 2015-06-06 | 2015-07-09 | PQ-CS-C-612 | 127d | 0d | Shop Drawings Submittals [60 h] |
| SD-CS-B3-1092 |  | Review & Approval of SD of Main Resident Pool | 30d | 2015-06-17 | 2015-07-23 | SD-CS-B3-1082 SS+10d, SD-CS-B3-1082 FF+10d | 161d | 159d | Shop Drawings Approval [40 h] |
|  | 1 | **Children Pool** |  | 2015-07-11 | 2015-08-27 |  |  |  |  |
| SD-CS-B3-1102 |  | Preparation & Submittals of SD of Children Pool | 30d | 2015-07-11 | 2015-08-16 | SD-CS-B3-1082 | 127d | 0d | Shop Drawings Submittals [60 h] |
| SD-CS-B3-1112 |  | Review & Approval of SD of Children Pool | 30d | 2015-07-25 | 2015-08-27 | SD-CS-B3-1102 SS+10d, SD-CS-B3-1102 FF+10d | 157d | 155d | Shop Drawings Approval [40 h] |

| ID | WBS | Activity | Duration | Start | Finish | Predecessors | Total float | Free float | Resources | Cost |
| --- | --- | --- | --- | --- | --- | --- | --- | --- | --- | --- |
|  | 2 | **SPA Pool** |  | 2015-08-17 | 2015-10-05 |  |  |  |  |  |
| SD-CS-B3-1122 |  | Preparation & Submittals of SD of Water Fountain | 30d | 2015-08-17 | 2015-09-23 | SD-CS-B3-1102 | 127d | 0d | Shop Drawings Submittals [60 h] |  |
| SD-CS-B3-1132 |  | Review & Approval of SD of Water Fountain | 30d | 2015-08-29 | 2015-10-05 | SD-CS-B3-1122 SS+10d, SD-CS-B3-1122 FF+10d | 127d | 125d | Shop Drawings Approval [40 h] |  |
|  | 8 | **Landscaping & External Works** |  | 2015-06-22 | 2015-12-31 |  |  |  |  |  |
|  | 1 | **Landscaping - Drawings** |  | 2015-06-22 | 2015-08-09 |  |  |  |  |  |
| SD-CS-B3-1142 |  | Preparation & Submittals of SD of Landscaping | 30d | 2015-06-22 | 2015-07-28 | PQ-CS-C-632 | 308d | 0d | Shop Drawings Submittals [60 h] | 20,583.14 |
| SD-CS-B3-1152 |  | Review & Approval of SD of Landscaping | 30d | 2015-07-04 | 2015-08-09 | SD-CS-B3-1142 SS+10d, SD-CS-B3-1142 FF+10d | 475d | 271d | Shop Drawings Approval [40 h] | 20,583.14 |
|  | 2 | **External Works - Drawings** |  | 2015-07-29 | 2015-09-13 |  |  |  |  |  |
| SD-CS-B3-1162 |  | Preparation & Submittals of SD of External Works | 30d | 2015-07-29 | 2015-09-01 | PQ-CS-C-652, SD-CS-B3-1142 | 308d | 0d | Shop Drawings Submittals [60 h] |  |
| SD-CS-B3-1172 |  | Review & Approval of SD of External Works | 30d | 2015-08-10 | 2015-09-13 | SD-CS-B3-1162 SS+10d, SD-CS-B3-1162 FF+10d | 308d | 241d | Shop Drawings Approval [40 h] |  |
|  | 3 | **Water Fountain - Drawings** |  | 2015-09-02 | 2015-10-21 |  |  |  |  |  |
| SD-CS-B3-1182 |  | Preparation & Submittals of SD of Water Fountain | 30d | 2015-09-02 | 2015-10-10 | PQ-CS-C-672, SD-CS-B3-1162 | 387d | 0d | Shop Drawings Submittals [60 h] |  |
| SD-CS-B3-1192 |  | Review & Approval of SD of Water Fountain | 30d | 2015-09-14 | 2015-10-21 | SD-CS-B3-1182 SS+10d, SD-CS-B3-1182 FF+10d | 406d | 141d | Shop Drawings Approval [40 h] |  |
|  | 7 | **External Signage - Drawings** |  | 2015-10-11 | 2015-11-25 |  |  |  |  |  |
| SD-CS-B3-1202 |  | Preparation & Submittals of SD of External Signage | 30d | 2015-10-11 | 2015-11-14 | PQ-CS-C-692, SD-CS-B3-1182 | 387d | 0d | Shop Drawings Submittals [60 h] |  |
| SD-CS-B3-1212 |  | Review & Approval of SD of External Signage | 30d | 2015-10-22 | 2015-11-25 | SD-CS-B3-1202 SS+10d, SD-CS-B3-1202 FF+10d | 387d |  | Shop Drawings Approval [40 h] |  |
|  | 8 | **Car Park Control Barriers & Bollards - Drawings** |  | 2015-11-15 | 2015-12-31 |  |  |  |  |  |
| SD-CS-B3-1222 |  | Preparation & Submittals of SD of Car Park Barriers & Bollards | 30d | 2015-11-15 | 2015-12-20 | PQ-CS-C-712, SD-CS-B3-1202 | 402d | 0d | Shop Drawings Submittals [60 h] |  |
| SD-CS-B3-1232 |  | Review & Approval of SD of Car Park Barriers & Bollards | 30d | 2015-11-26 | 2015-12-31 | SD-CS-B3-1222 SS+10d, SD-CS-B3-1222 FF+10d | 402d | 0d | Shop Drawings Approval [40 h] |  |
|  | 9 | **Furniture** |  | 2015-08-29 | 2016-12-17 |  |  |  |  |  |
|  | 3 | **Ground Floor level - Shop drawings** |  | 2015-08-29 | 2015-10-17 |  |  |  |  |  |
| SD-CS-B1-502 |  | Preparation & Submittals of SD of Furniture at GF | 30d | 2015-08-29 | 2015-10-05 | PQ-CS-C-732 | 151d | 0d | Shop Drawings Submittals [60 h] |  |
| SD-CS-B1-512 |  | Review & Approval of SD of Furniture at GF | 30d | 2015-09-09 | 2015-10-17 | SD-CS-B1-502 SS+10d, SD-CS-B1-502 FF+10d | 503d | 316d | Shop Drawings Approval [40 h] |  |
|  | 4 | **Mezzanine Floor level - Shop drawings** |  | 2015-09-06 | 2015-10-25 |  |  |  |  |  |
| SD-CS-GF-502 |  | Preparation & Submittals of SD of Furniture at ML | 30d | 2015-09-06 | 2015-10-13 | SD-CS-B1-502 SS+7d | 151d | 0d | Shop Drawings Submittals [60 h] |  |
| SD-CS-GF-512 |  | Review & Approval of SD of Furniture at ML | 30d | 2015-09-17 | 2015-10-25 | SD-CS-GF-502 SS+10d, SD-CS-GF-502 FF+10d | 496d | 309d | Shop Drawings Approval [40 h] |  |

Notes:
- SD-CS-B3-1142: Expenses: 1 20583.1
- SD-CS-B3-1152: Expenses: 1 20583.1

| ID | WBS | Activity | Duration | Start | Finish | Predecessors | Total float | Free float | Resources |
| --- | --- | --- | --- | --- | --- | --- | --- | --- | --- |
|  | 5 | **Level 1 Floor - Shop drawings** |  | 2015-09-14 | 2015-11-02 |  |  |  |  |
| SD-CS-L1-522 |  | Preparation & Submittals of SD of Furniture at L1 | 30d | 2015-09-14 | 2015-10-21 | SD-CS-GF-502 SS+7d | 489d | 0d | Shop Drawings Submittals [60 h] |
| SD-CS-L1-532 |  | Review & Approval of SD of Furniture at L1 | 30d | 2015-09-29 | 2015-11-02 | SD-CS-L1-522 SS+10d, SD-CS-L1-522 FF+10d | 489d | 302d | Shop Drawings Approval [40 h] |
|  | 6 | **Level 2 Floor - Shop drawings** |  | 2015-09-14 | 2015-11-02 |  |  |  |  |
| SD-CS-L2-542 |  | Preparation & Submittals of SD of Furniture at L2 | 30d | 2015-09-14 | 2015-10-21 | SD-CS-GF-502 SS+7d | 151d | 0d | Shop Drawings Submittals [60 h] |
| SD-CS-L2-552 |  | Review & Approval of SD of Furniture at L2 | 30d | 2015-09-29 | 2015-11-02 | SD-CS-L2-542 SS+10d, SD-CS-L2-542 FF+10d | 489d | 302d | Shop Drawings Approval [40 h] |
|  | 7 | **Level 3 Floor - Shop drawings** |  | 2015-09-26 | 2015-11-10 |  |  |  |  |
| SD-CS-L3-562 |  | Preparation & Submittals of SD of Furniture at L3 | 30d | 2015-09-26 | 2015-10-29 | SD-CS-L2-542 SS+7d | 151d | 0d | Shop Drawings Submittals [60 h] |
| SD-CS-L3-572 |  | Review & Approval of SD of Furniture at L3 | 30d | 2015-10-07 | 2015-11-10 | SD-CS-L3-562 SS+10d, SD-CS-L3-562 FF+10d | 482d | 295d | Shop Drawings Approval [40 h] |
|  | 8 | **Level 4 Floor - Shop drawings** |  | 2015-10-04 | 2015-11-18 |  |  |  |  |
| SD-CS-L4-1582 |  | Preparation & Submittals of SD of Furniture at L4 | 30d | 2015-10-04 | 2015-11-07 | SD-CS-L3-562 SS+7d | 151d | 0d | Shop Drawings Submittals [60 h] |
| SD-CS-L4-1592 |  | Review & Approval of SD of Furniture at L4 | 30d | 2015-10-15 | 2015-11-18 | SD-CS-L4-1582 SS+10d, SD-CS-L4-1582 FF+10d | 460d | 299d | Shop Drawings Approval [40 h] |
|  | 9 | **Level 5 Floor - Shop drawings** |  | 2015-10-12 | 2015-11-26 |  |  |  |  |
| SD-CS-L5-602 |  | Preparation & Submittals of SD of Furniture at L5 | 30d | 2015-10-12 | 2015-11-15 | SD-CS-L4-1582 SS+7d | 151d | 0d | Shop Drawings Submittals [60 h] |
| SD-CS-L5-612 |  | Review & Approval of SD of Furniture at L5 | 30d | 2015-10-24 | 2015-11-26 | SD-CS-L5-602 SS+10d, SD-CS-L5-602 FF+10d | 453d | 282d | Shop Drawings Approval [40 h] |
|  | 10 | **Level 6 Floor - Shop drawings** |  | 2015-10-20 | 2015-12-05 |  |  |  |  |
| SD-CS-L6-622 |  | Preparation & Submittals of SD of Furniture at L6 | 30d | 2015-10-20 | 2015-11-23 | SD-CS-L5-602 SS+7d | 151d | 0d | Shop Drawings Submittals [60 h] |
| SD-CS-L6-632 |  | Review & Approval of SD of Furniture at L6 | 30d | 2015-11-01 | 2015-12-05 | SD-CS-L6-622 SS+10d, SD-CS-L6-622 FF+10d | 446d | 275d | Shop Drawings Approval [40 h] |
|  | 11 | **Level 7 Floor - Shop drawings** |  | 2015-10-28 | 2015-12-13 |  |  |  |  |
| SD-CS-L7-642 |  | Preparation & Submittals of SD of Furniture at L7 | 30d | 2015-10-28 | 2015-12-01 | SD-CS-L6-622 SS+7d | 151d | 0d | Shop Drawings Submittals [60 h] |
| SD-CS-L7-652 |  | Review & Approval of SD of Furniture at L7 | 30d | 2015-11-09 | 2015-12-13 | SD-CS-L7-642 SS+10d, SD-CS-L7-642 FF+10d | 439d | 268d | Shop Drawings Approval [40 h] |
|  | 12 | **Level 8 Floor - Shop drawings** |  | 2015-11-05 | 2015-12-22 |  |  |  |  |
| SD-CS-L8-662 |  | Preparation & Submittals of SD of Furniture at L8 | 30d | 2015-11-05 | 2015-12-09 | SD-CS-L7-642 SS+7d | 151d | 0d | Shop Drawings Submittals [60 h] |
| SD-CS-L8-672 |  | Review & Approval of SD of Furniture at L8 | 30d | 2015-11-17 | 2015-12-22 | SD-CS-L8-662 SS+10d, SD-CS-L8-662 FF+10d | 432d | 261d | Shop Drawings Approval [40 h] |

| ID | WBS | Activity | Duration | Start | Finish | Predecessors | Total float | Free float | Resources |
| --- | --- | --- | --- | --- | --- | --- | --- | --- | --- |
|  | 13 | **Level 9 Floor - Shop drawings** |  | 2015-11-14 | 2015-12-30 |  |  |  |  |
| SD-CS-L9-682 |  | Preparation & Submittals of SD of Furniture at L9 | 30d | 2015-11-14 | 2015-12-17 | SD-CS-L8-662 SS+7d | 151d | 0d | Shop Drawings Submittals [60 h] |
| SD-CS-L9-692 |  | Review & Approval of SD of Furniture at L9 | 30d | 2015-11-25 | 2015-12-30 | SD-CS-L9-682 SS+10d, SD-CS-L9-682 FF+10d | 425d | 254d | Shop Drawings Approval [40 h] |
|  | 14 | **Level 10 Floor - Shop drawings** |  | 2015-11-22 | 2016-01-07 |  |  |  |  |
| SD-CS-L10-702 |  | Preparation & Submittals of SD of Furniture at L10 | 30d | 2015-11-22 | 2015-12-27 | SD-CS-L9-682 SS+7d | 151d | 0d | Shop Drawings Submittals [60 h] |
| SD-CS-L10-712 |  | Review & Approval of SD of Furniture at L10 | 30d | 2015-12-03 | 2016-01-07 | SD-CS-L10-702 SS+10d, SD-CS-L10-702 FF+10d | 418d | 247d | Shop Drawings Approval [40 h] |
|  | 15 | **Level 11 Floor - Shop drawings** |  | 2015-11-30 | 2016-01-16 |  |  |  |  |
| SD-CS-L11-722 |  | Preparation & Submittals of SD of Furniture at L11 | 30d | 2015-11-30 | 2016-01-04 | SD-CS-L10-702 SS+7d | 151d | 0d | Shop Drawings Submittals [60 h] |
| SD-CS-L11-732 |  | Review & Approval of SD of Furniture at L11 | 30d | 2015-12-12 | 2016-01-16 | SD-CS-L11-722 SS+10d, SD-CS-L11-722 FF+10d | 411d | 240d | Shop Drawings Approval [40 h] |
|  | 16 | **Level 12 Floor - Shop drawings** |  | 2015-12-08 | 2016-01-24 |  |  |  |  |
| SD-CS-L12-742 |  | Preparation & Submittals of SD of Furniture at L12 | 30d | 2015-12-08 | 2016-01-12 | SD-CS-L11-722 SS+7d | 151d | 0d | Shop Drawings Submittals [60 h] |
| SD-CS-L12-752 |  | Review & Approval of SD of Furniture at L12 | 30d | 2015-12-21 | 2016-01-24 | SD-CS-L12-742 SS+10d, SD-CS-L12-742 FF+10d | 404d | 245d | Shop Drawings Approval [40 h] |
|  | 17 | **Level 13 Floor - Shop drawings** |  | 2015-12-16 | 2016-02-01 |  |  |  |  |
| SD-CS-L13-762 |  | Preparation & Submittals of SD of Furniture at L13 | 30d | 2015-12-16 | 2016-01-20 | SD-CS-L12-742 SS+7d | 151d | 0d | Shop Drawings Submittals [60 h] |
| SD-CS-L13-772 |  | Review & Approval of SD of Furniture at L13 | 30d | 2015-12-29 | 2016-02-01 | SD-CS-L13-762 SS+10d, SD-CS-L13-762 FF+10d | 397d | 238d | Shop Drawings Approval [40 h] |
|  | 18 | **Level 14 Floor - Shop drawings** |  | 2015-12-26 | 2016-02-09 |  |  |  |  |
| SD-CS-L14-782 |  | Preparation & Submittals of SD of Furniture at L14 | 30d | 2015-12-26 | 2016-01-28 | SD-CS-L13-762 SS+7d | 151d | 0d | Shop Drawings Submittals [60 h] |
| SD-CS-L14-792 |  | Review & Approval of SD of Furniture at L14 | 30d | 2016-01-06 | 2016-02-09 | SD-CS-L14-782 SS+10d, SD-CS-L14-782 FF+10d | 390d | 231d | Shop Drawings Approval [40 h] |
|  | 19 | **Level 15 Floor - Shop drawings** |  | 2016-01-03 | 2016-02-18 |  |  |  |  |
| SD-CS-L15-802 |  | Preparation & Submittals of SD of Furniture at L15 | 30d | 2016-01-03 | 2016-02-06 | SD-CS-L14-782 SS+7d | 151d | 0d | Shop Drawings Submittals [60 h] |
| SD-CS-L15-812 |  | Review & Approval of SD of Furniture at L15 | 30d | 2016-01-14 | 2016-02-18 | SD-CS-L15-802 SS+10d, SD-CS-L15-802 FF+10d | 383d | 224d | Shop Drawings Approval [40 h] |
|  | 20 | **Level 16 Floor - Shop drawings** |  | 2016-01-11 | 2016-02-27 |  |  |  |  |
| SD-CS-L16-822 |  | Preparation & Submittals of SD of Furniture at L16 | 30d | 2016-01-11 | 2016-02-15 | SD-CS-L15-802 SS+7d | 151d | 0d | Shop Drawings Submittals [60 h] |
| SD-CS-L16-832 |  | Review & Approval of SD of Furniture at L16 | 30d | 2016-01-23 | 2016-02-27 | SD-CS-L16-822 SS+10d, SD-CS-L16-822 FF+10d | 376d | 217d | Shop Drawings Approval [40 h] |

| ID | WBS | Activity | Duration | Start | Finish | Predecessors | Total float | Free float | Resources |
| --- | --- | --- | --- | --- | --- | --- | --- | --- | --- |
|  | 21 | **Level 17 Floor - Shop drawings** |  | 2016-01-19 | 2016-03-06 |  |  |  |  |
| SD-CS-L17-1602 |  | Preparation & Submittals of SD of Furniture at L17 | 30d | 2016-01-19 | 2016-02-23 | SD-CS-L16-822 SS+7d | 151d | 0d | Shop Drawings Submittals [60 h] |
| SD-CS-L17-1612 |  | Review & Approval of SD of Furniture at L17 | 30d | 2016-01-31 | 2016-03-06 | SD-CS-L17-1602 SS+10d, SD-CS-L17-1602 FF+10d | 369d | 210d | Shop Drawings Approval [40 h] |
|  | 22 | **Level 18 Floor - Shop drawings** |  | 2016-01-27 | 2016-03-14 |  |  |  |  |
| SD-CS-L18-862 |  | Preparation & Submittals of SD of Furniture at L18 | 30d | 2016-01-27 | 2016-03-02 | SD-CS-L17-1602 SS+7d | 151d | 0d | Shop Drawings Submittals [60 h] |
| SD-CS-L18-872 |  | Review & Approval of SD of Furniture at L18 | 30d | 2016-02-08 | 2016-03-14 | SD-CS-L18-862 SS+10d, SD-CS-L18-862 FF+10d | 362d | 215d | Shop Drawings Approval [40 h] |
|  | 23 | **Level 19 Floor - Shop drawings** |  | 2016-02-04 | 2016-03-22 |  |  |  |  |
| SD-CS-L19-882 |  | Preparation & Submittals of SD of Furniture at L19 | 30d | 2016-02-04 | 2016-03-10 | SD-CS-L18-862 SS+7d | 151d | 0d | Shop Drawings Submittals [60 h] |
| SD-CS-L19-892 |  | Review & Approval of SD of Furniture at L19 | 30d | 2016-02-17 | 2016-03-22 | SD-CS-L19-882 SS+10d, SD-CS-L19-882 FF+10d | 355d | 208d | Shop Drawings Approval [40 h] |
|  | 24 | **Level 20 Floor - Shop drawings** |  | 2016-02-14 | 2016-03-30 |  |  |  |  |
| SD-CS-L20-902 |  | Preparation & Submittals of SD of Furniture Works at L20 | 30d | 2016-02-14 | 2016-03-19 | SD-CS-L19-882 SS+7d | 151d | 0d | Shop Drawings Submittals [60 h] |
| SD-CS-L20-912 |  | Review & Approval of SD of Furniture Works at L20 | 30d | 2016-02-25 | 2016-03-30 | SD-CS-L20-902 SS+10d, SD-CS-L20-902 FF+10d | 348d | 201d | Shop Drawings Approval [40 h] |
|  | 25 | **Level 21 Floor - Shop drawings** |  | 2016-02-22 | 2016-04-07 |  |  |  |  |
| SD-CS-L21-922 |  | Preparation & Submittals of SD of Furniture Works at L21 | 30d | 2016-02-22 | 2016-03-27 | SD-CS-L20-902 SS+7d | 151d | 0d | Shop Drawings Submittals [60 h] |
| SD-CS-L21-932 |  | Review & Approval of SD of Furniture Works at L21 | 30d | 2016-03-05 | 2016-04-07 | SD-CS-L21-922 SS+10d, SD-CS-L21-922 FF+10d | 341d | 194d | Shop Drawings Approval [40 h] |
|  | 26 | **Level 22 Floor - Shop drawings** |  | 2016-03-01 | 2016-04-16 |  |  |  |  |
| SD-CS-L22-942 |  | Preparation & Submittals of SD of Furniture Works at L22 | 30d | 2016-03-01 | 2016-04-04 | SD-CS-L21-922 SS+7d | 151d | 0d | Shop Drawings Submittals [60 h] |
| SD-CS-L22-952 |  | Review & Approval of SD of Furniture Works at L22 | 30d | 2016-03-13 | 2016-04-16 | SD-CS-L22-942 SS+10d, SD-CS-L22-942 FF+10d | 334d | 187d | Shop Drawings Approval [40 h] |
|  | 27 | **Level 23 Floor - Shop drawings** |  | 2016-03-09 | 2016-04-24 |  |  |  |  |
| SD-CS-L23-962 |  | Preparation & Submittals of SD of Furniture Works at L23 | 30d | 2016-03-09 | 2016-04-12 | SD-CS-L22-942 SS+7d | 151d | 0d | Shop Drawings Submittals [60 h] |
| SD-CS-L23-972 |  | Review & Approval of SD of Furniture Works at L23 | 30d | 2016-03-21 | 2016-04-24 | SD-CS-L23-962 SS+10d, SD-CS-L23-962 FF+10d | 327d | 180d | Shop Drawings Approval [40 h] |
|  | 28 | **Level 24 Floor - Shop drawings** |  | 2016-03-17 | 2016-05-02 |  |  |  |  |
| SD-CS-L24-982 |  | Preparation & Submittals of SD of Furniture Works at L24 | 30d | 2016-03-17 | 2016-04-20 | SD-CS-L23-962 SS+7d | 151d | 0d | Shop Drawings Submittals [60 h] |
| SD-CS-L24-992 |  | Review & Approval of SD of Furniture Works at L24 | 30d | 2016-03-29 | 2016-05-02 | SD-CS-L24-982 SS+10d, SD-CS-L24-982 FF+10d | 320d | 185d | Shop Drawings Approval [40 h] |

| ID | WBS | Activity | Duration | Start | Finish | Predecessors | Total float | Free float | Resources |
| --- | --- | --- | --- | --- | --- | --- | --- | --- | --- |
|  | 29 | **Level 25 Floor - Shop drawings** |  | 2016-03-26 | 2016-05-10 |  |  |  |  |
| SD-CS-L25-1002 |  | Preparation & Submittals of SD of Furniture Works at L25 | 30d | 2016-03-26 | 2016-04-28 | SD-CS-L24-982 SS+7d | 151d | 0d | Shop Drawings Submittals [60 h] |
| SD-CS-L25-1012 |  | Review & Approval of SD of Furniture Works at L25 | 30d | 2016-04-06 | 2016-05-10 | SD-CS-L25-1002 SS+10d, SD-CS-L25-1002 FF+10d | 313d | 178d | Shop Drawings Approval [40 h] |
|  | 30 | **Level 26 Floor - Shop drawings** |  | 2016-04-03 | 2016-05-18 |  |  |  |  |
| SD-CS-L26-1022 |  | Preparation & Submittals of SD of Furniture Works at L26 | 30d | 2016-04-03 | 2016-05-07 | SD-CS-L25-1002 SS+7d | 151d | 0d | Shop Drawings Submittals [60 h] |
| SD-CS-L26-1032 |  | Review & Approval of SD of Furniture Works at L26 | 30d | 2016-04-14 | 2016-05-18 | SD-CS-L26-1022 SS+10d, SD-CS-L26-1022 FF+10d | 306d | 171d | Shop Drawings Approval [40 h] |
|  | 31 | **Level 27 Floor - Shop drawings** |  | 2016-04-11 | 2016-05-26 |  |  |  |  |
| SD-CS-L27-1042 |  | Preparation & Submittals of SD of Furniture Works at L27 | 30d | 2016-04-11 | 2016-05-15 | SD-CS-L26-1022 SS+7d | 151d | 0d | Shop Drawings Submittals [60 h] |
| SD-CS-L27-1052 |  | Review & Approval of SD of Furniture Works at L27 | 30d | 2016-04-23 | 2016-05-26 | SD-CS-L27-1042 SS+10d, SD-CS-L27-1042 FF+10d | 299d | 164d | Shop Drawings Approval [40 h] |
|  | 32 | **Level 28 Floor - Shop drawings** |  | 2016-04-19 | 2016-06-04 |  |  |  |  |
| SD-CS-L28-1062 |  | Preparation & Submittals of SD of Furniture Works at L28 | 30d | 2016-04-19 | 2016-05-23 | SD-CS-L27-1042 SS+7d | 151d | 0d | Shop Drawings Submittals [60 h] |
| SD-CS-L28-1072 |  | Review & Approval of SD of Furniture Works at L28 | 30d | 2016-05-01 | 2016-06-04 | SD-CS-L28-1062 SS+10d, SD-CS-L28-1062 FF+10d | 292d | 157d | Shop Drawings Approval [40 h] |
|  | 33 | **Level 29 Floor - Shop drawings** |  | 2016-04-27 | 2016-06-12 |  |  |  |  |
| SD-CS-L29-1082 |  | Preparation & Submittals of SD of Furniture Works at L29 | 30d | 2016-04-27 | 2016-05-31 | SD-CS-L28-1062 SS+7d | 151d | 0d | Shop Drawings Submittals [60 h] |
| SD-CS-L29-1092 |  | Review & Approval of SD of Furniture Works at L29 | 30d | 2016-05-09 | 2016-06-12 | SD-CS-L29-1082 SS+10d, SD-CS-L29-1082 FF+10d | 285d | 150d | Shop Drawings Approval [40 h] |
|  | 34 | **Level 30 Floor - Shop drawings** |  | 2016-05-05 | 2016-06-20 |  |  |  |  |
| SD-CS-L30-1102 |  | Preparation & Submittals of SD of Furniture Works at L30 | 30d | 2016-05-05 | 2016-06-08 | SD-CS-L29-1082 SS+7d | 151d | 0d | Shop Drawings Submittals [60 h] |
| SD-CS-L30-1112 |  | Review & Approval of SD of Furniture Works at L30 | 30d | 2016-05-17 | 2016-06-20 | SD-CS-L30-1102 SS+10d, SD-CS-L30-1102 FF+10d | 283d | 155d | Shop Drawings Approval [40 h] |
|  | 35 | **Level 31 Floor - Shop drawings** |  | 2016-05-14 | 2016-06-28 |  |  |  |  |
| SD-CS-L31-1122 |  | Preparation & Submittals of SD of Furniture Works at L31 | 30d | 2016-05-14 | 2016-06-16 | SD-CS-L30-1102 SS+7d | 151d | 0d | Shop Drawings Submittals [60 h] |
| SD-CS-L31-1132 |  | Review & Approval of SD of Furniture Works at L31 | 30d | 2016-05-25 | 2016-06-28 | SD-CS-L31-1122 SS+10d, SD-CS-L31-1122 FF+10d | 276d | 148d | Shop Drawings Approval [40 h] |
|  | 36 | **Level 32 Floor - Shop drawings** |  | 2016-05-22 | 2016-07-10 |  |  |  |  |
| SD-CS-L32-1142 |  | Preparation & Submittals of SD of Furniture Works at L32 | 30d | 2016-05-22 | 2016-06-25 | SD-CS-L31-1122 SS+7d | 151d | 0d | Shop Drawings Submittals [60 h] |
| SD-CS-L32-1152 |  | Review & Approval of SD of Furniture Works at L32 | 30d | 2016-06-02 | 2016-07-10 | SD-CS-L32-1142 SS+10d, SD-CS-L32-1142 FF+10d | 269d | 141d | Shop Drawings Approval [40 h] |

| ID | WBS | Activity | Duration | Start | Finish | Predecessors | Total float | Free float | Resources |
| --- | --- | --- | --- | --- | --- | --- | --- | --- | --- |
|  | 37 | **Level 33 Floor - Shop drawings** |  | 2016-05-30 | 2016-07-18 |  |  |  |  |
| SD-CS-L33-1162 |  | Preparation & Submittals of SD of Furniture Works at L33 | 30d | 2016-05-30 | 2016-07-03 | SD-CS-L32-1142 SS+7d | 151d | 0d | Shop Drawings Submittals [60 h] |
| SD-CS-L33-1172 |  | Review & Approval of SD of Furniture Works at L33 | 30d | 2016-06-11 | 2016-07-18 | SD-CS-L33-1162 SS+10d, SD-CS-L33-1162 FF+10d | 262d | 134d | Shop Drawings Approval [40 h] |
|  | 38 | **Level 34 Floor - Shop drawings** |  | 2016-06-07 | 2016-07-26 |  |  |  |  |
| SD-CS-L34-1182 |  | Preparation & Submittals of SD of Furniture Works at L34 | 30d | 2016-06-07 | 2016-07-14 | SD-CS-L33-1162 SS+7d | 151d | 0d | Shop Drawings Submittals [60 h] |
| SD-CS-L34-1192 |  | Review & Approval of SD of Furniture Works at L34 | 30d | 2016-06-19 | 2016-07-26 | SD-CS-L34-1182 SS+10d, SD-CS-L34-1182 FF+10d | 255d | 127d | Shop Drawings Approval [40 h] |
|  | 39 | **Level 35 Floor - Shop drawings** |  | 2016-06-15 | 2016-08-03 |  |  |  |  |
| SD-CS-L35-1202 |  | Preparation & Submittals of SD of Furniture Works at L35 | 30d | 2016-06-15 | 2016-07-23 | SD-CS-L34-1182 SS+7d | 151d | 0d | Shop Drawings Submittals [60 h] |
| SD-CS-L35-1212 |  | Review & Approval of SD of Furniture Works at L35 | 30d | 2016-06-27 | 2016-08-03 | SD-CS-L35-1202 SS+10d, SD-CS-L35-1202 FF+10d | 248d | 120d | Shop Drawings Approval [40 h] |
|  | 40 | **Level 36 Floor - Shop drawings** |  | 2016-06-23 | 2016-08-11 |  |  |  |  |
| SD-CS-L36-1222 |  | Preparation & Submittals of SD of Furniture Works at L36 | 30d | 2016-06-23 | 2016-07-31 | SD-CS-L35-1202 SS+7d | 151d | 0d | Shop Drawings Submittals [60 h] |
| SD-CS-L36-1232 |  | Review & Approval of SD of Furniture Works at L36 | 30d | 2016-07-09 | 2016-08-11 | SD-CS-L36-1222 SS+10d, SD-CS-L36-1222 FF+10d | 241d | 113d | Shop Drawings Approval [40 h] |
|  | 41 | **Level 37 Floor - Shop drawings** |  | 2016-07-02 | 2016-08-20 |  |  |  |  |
| SD-CS-L37-1242 |  | Preparation & Submittals of SD of Furniture Works at L37 | 30d | 2016-07-02 | 2016-08-08 | SD-CS-L36-1222 SS+7d | 151d | 0d | Shop Drawings Submittals [60 h] |
| SD-CS-L37-1252 |  | Review & Approval of SD of Furniture Works at L37 | 30d | 2016-07-17 | 2016-08-20 | SD-CS-L37-1242 SS+10d, SD-CS-L37-1242 FF+10d | 234d | 106d | Shop Drawings Approval [40 h] |
|  | 42 | **Level 38 Floor - Shop drawings** |  | 2016-07-13 | 2016-08-28 |  |  |  |  |
| SD-CS-L38-1262 |  | Preparation & Submittals of SD of Furniture Works at L38 | 30d | 2016-07-13 | 2016-08-16 | SD-CS-L37-1242 SS+7d | 151d | 0d | Shop Drawings Submittals [60 h] |
| SD-CS-L38-1272 |  | Review & Approval of SD of Furniture Works at L38 | 30d | 2016-07-25 | 2016-08-28 | SD-CS-L38-1262 SS+10d, SD-CS-L38-1262 FF+10d | 227d | 99d | Shop Drawings Approval [40 h] |
|  | 43 | **Level 39 Floor - Shop drawings** |  | 2016-07-21 | 2016-09-05 |  |  |  |  |
| SD-CS-L39-1282 |  | Preparation & Submittals of SD of Furniture Works at L39 | 30d | 2016-07-21 | 2016-08-24 | SD-CS-L38-1262 SS+7d | 151d | 0d | Shop Drawings Submittals [60 h] |
| SD-CS-L39-1292 |  | Review & Approval of SD of Furniture Works at L39 | 30d | 2016-08-02 | 2016-09-05 | SD-CS-L39-1282 SS+10d, SD-CS-L39-1282 FF+10d | 220d | 92d | Shop Drawings Approval [40 h] |
|  | 44 | **Level 40 Floor - Shop drawings** |  | 2016-07-30 | 2016-09-17 |  |  |  |  |
| SD-CS-L40-1302 |  | Preparation & Submittals of SD of Furniture Works at L40 | 30d | 2016-07-30 | 2016-09-01 | SD-CS-L39-1282 SS+7d | 151d | 0d | Shop Drawings Submittals [60 h] |
| SD-CS-L40-1312 |  | Review & Approval of SD of Furniture Works at L40 | 30d | 2016-08-10 | 2016-09-17 | SD-CS-L40-1302 SS+10d, SD-CS-L40-1302 FF+10d | 213d | 85d | Shop Drawings Approval [40 h] |

| ID | WBS | Activity | Duration | Start | Finish | Predecessors | Total float | Free float | Resources |
| --- | --- | --- | --- | --- | --- | --- | --- | --- | --- |
|  | 45 | **Level 41 Floor - Shop drawings** |  | 2016-08-07 | 2016-09-26 |  |  |  |  |
| SD-CS-L41-1322 |  | Preparation & Submittals of SD of Furniture Works at L41 | 30d | 2016-08-07 | 2016-09-13 | SD-CS-L40-1302 SS+7d | 151d | 0d | Shop Drawings Submittals [60 h] |
| SD-CS-L41-1332 |  | Review & Approval of SD of Furniture Works at L41 | 30d | 2016-08-18 | 2016-09-26 | SD-CS-L41-1322 SS+10d, SD-CS-L41-1322 FF+10d | 206d | 78d | Shop Drawings Approval [40 h] |
|  | 46 | **Level 42 Floor - Shop drawings** |  | 2016-08-15 | 2016-10-04 |  |  |  |  |
| SD-CS-L42-1342 |  | Preparation & Submittals of SD of Furniture Works at L42 | 30d | 2016-08-15 | 2016-09-21 | SD-CS-L41-1322 SS+7d | 151d | 0d | Shop Drawings Submittals [60 h] |
| SD-CS-L42-1352 |  | Review & Approval of SD of Furniture Works at L42 | 30d | 2016-08-27 | 2016-10-04 | SD-CS-L42-1342 SS+10d, SD-CS-L42-1342 FF+10d | 214d | 83d | Shop Drawings Approval [40 h] |
|  | 47 | **Level 43 Floor - Shop drawings** |  | 2016-08-23 | 2016-10-12 |  |  |  |  |
| SD-CS-L43-1362 |  | Preparation & Submittals of SD of Furniture Works at L43 | 30d | 2016-08-23 | 2016-10-01 | SD-CS-L42-1342 SS+7d | 151d | 0d | Shop Drawings Submittals [60 h] |
| SD-CS-L43-1372 |  | Review & Approval of SD of Furniture Works at L43 | 30d | 2016-09-04 | 2016-10-12 | SD-CS-L43-1362 SS+10d, SD-CS-L43-1362 FF+10d | 207d | 76d | Shop Drawings Approval [40 h] |
|  | 48 | **Level 44 Floor - Shop drawings** |  | 2016-08-31 | 2016-10-20 |  |  |  |  |
| SD-CS-L44-1382 |  | Preparation & Submittals of SD of Furniture Works at L44 | 30d | 2016-08-31 | 2016-10-09 | SD-CS-L43-1362 SS+7d | 151d | 0d | Shop Drawings Submittals [60 h] |
| SD-CS-L44-1392 |  | Review & Approval of SD of Furniture Works at L44 | 30d | 2016-09-15 | 2016-10-20 | SD-CS-L44-1382 SS+10d, SD-CS-L44-1382 FF+10d | 200d | 69d | Shop Drawings Approval [40 h] |
|  | 49 | **Level 45 Floor - Shop drawings** |  | 2016-09-08 | 2016-10-29 |  |  |  |  |
| SD-CS-L45-1402 |  | Preparation & Submittals of SD of Furniture Works at L45 | 30d | 2016-09-08 | 2016-10-17 | SD-CS-L44-1382 SS+7d | 151d | 0d | Shop Drawings Submittals [60 h] |
| SD-CS-L45-1412 |  | Review & Approval of SD of Furniture Works at L45 | 30d | 2016-09-25 | 2016-10-29 | SD-CS-L45-1402 SS+10d, SD-CS-L45-1402 FF+10d | 193d | 62d | Shop Drawings Approval [40 h] |
|  | 50 | **Level 46 Floor - Shop drawings** |  | 2016-09-20 | 2016-11-06 |  |  |  |  |
| SD-CS-L46-1422 |  | Preparation & Submittals of SD of Furniture Works at L46 | 30d | 2016-09-20 | 2016-10-25 | SD-CS-L45-1402 SS+7d | 151d | 0d | Shop Drawings Submittals [60 h] |
| SD-CS-L46-1432 |  | Review & Approval of SD of Furniture Works at L46 | 30d | 2016-10-03 | 2016-11-06 | SD-CS-L46-1422 SS+10d, SD-CS-L46-1422 FF+10d | 186d | 55d | Shop Drawings Approval [40 h] |
|  | 53 | **Level 47 Floor - Shop drawings** |  | 2016-09-29 | 2016-11-14 |  |  |  |  |
| SD-CS-L47-1442 |  | Preparation & Submittals of SD of Furniture Works at L47 | 30d | 2016-09-29 | 2016-11-02 | SD-CS-L46-1422 SS+7d | 151d | 0d | Shop Drawings Submittals [60 h] |
| SD-CS-L47-1452 |  | Review & Approval of SD of Furniture Works at L47 | 30d | 2016-10-11 | 2016-11-14 | SD-CS-L47-1442 SS+10d, SD-CS-L47-1442 FF+10d | 179d | 48d | Shop Drawings Approval [40 h] |
|  | 51 | **Level 48 Floor - Shop drawings** |  | 2016-10-08 | 2016-11-22 |  |  |  |  |
| SD-CS-L48-1462 |  | Preparation & Submittals of SD of Furniture Works at L48 | 30d | 2016-10-08 | 2016-11-10 | SD-CS-L47-1442 SS+7d | 151d | 0d | Shop Drawings Submittals [60 h] |
| SD-CS-L48-1472 |  | Review & Approval of SD of Furniture Works at L48 | 30d | 2016-10-19 | 2016-11-22 | SD-CS-L48-1462 SS+10d, SD-CS-L48-1462 FF+10d | 172d | 41d | Shop Drawings Approval [40 h] |

| ID | WBS | Activity | Duration | Start | Finish | Predecessors | Total float | Free float | Calendar | Resources |
| --- | --- | --- | --- | --- | --- | --- | --- | --- | --- | --- |
|  | 52 | **Level 49 Floor - Shop drawings** |  | 2016-10-16 | 2016-11-30 |  |  |  |  |  |
| SD-CS-L49-1482 |  | Preparation & Submittals of SD of Furniture Works at L49 | 30d | 2016-10-16 | 2016-11-19 | SD-CS-L48-1462 SS+7d | 151d | 0d |  | Shop Drawings Submittals [60 h] |
| SD-CS-L49-1492 |  | Review & Approval of SD of Furniture Works at L49 | 30d | 2016-10-27 | 2016-11-30 | SD-CS-L49-1482 SS+10d, SD-CS-L49-1482 FF+10d | 165d | 34d |  | Shop Drawings Approval [40 h] |
|  | 54 | **Level 50 Floor - Shop drawings** |  | 2016-10-24 | 2016-12-08 |  |  |  |  |  |
| SD-CS-L50-1502 |  | Preparation & Submittals of SD of Furniture Works at L50 | 30d | 2016-10-24 | 2016-11-27 | SD-CS-L49-1482 SS+7d | 151d | 0d |  | Shop Drawings Submittals [60 h] |
| SD-CS-L50-1512 |  | Review & Approval of SD of Furniture Works at L50 | 30d | 2016-11-05 | 2016-12-08 | SD-CS-L50-1502 SS+10d, SD-CS-L50-1502 FF+10d | 158d | 29d |  | Shop Drawings Approval [40 h] |
|  | 55 | **Level 51 Floor - Shop drawings** |  | 2016-11-01 | 2016-12-17 |  |  |  |  |  |
| SD-CS-L51-2462 |  | Preparation & Submittals of SD of Furniture Works at L51 | 30d | 2016-11-01 | 2016-12-05 | SD-CS-L50-1502 SS+7d | 151d | 0d |  | Shop Drawings Submittals [60 h] |
| SD-CS-L51-2472 |  | Review & Approval of SD of Furniture Works at L51 | 30d | 2016-11-13 | 2016-12-17 | SD-CS-L51-2462 SS+10d, SD-CS-L51-2462 FF+10d | 151d | 21d |  | Shop Drawings Approval [40 h] |
|  | 1 | **Procurement** |  | 2014-10-02 | 2016-06-08 |  |  |  |  |  |
|  | 1 | **Civil/Structural** |  | 2014-10-02 | 2016-03-19 |  |  |  |  |  |
|  | 2 | **Concrete Mix** |  | 2014-10-19 | 2014-11-10 |  |  |  |  |  |
| P-CS-C-01 |  | Material Submittals of Concrete Mix Design | 7d | 2014-10-19 | 2014-10-26 | DS-C-PQ-CS-002 SS+1d | 0d |  |  | Material Submittals [60 h] |
| P-CS-C-02 |  | Material review & Approval of Concrete Mix Design | 10d | 2014-10-27 | 2014-11-06 | P-CS-C-01 | 0d |  |  | Material Approval [40 h] |
| P-CS-C-03 |  | P.O of Concrete | 1d | 2014-11-08 | 2014-11-08 | P-CS-C-02 | 0d |  |  | Purchase Order [20 h] |
| P-CS-C-3 |  | Start Delivery of Concrete | 2d | 2014-11-09 | 2014-11-10 | P-CS-C-03 | 0d |  |  |  |
|  | 9 | **Steel Reinforcement** |  | 2014-10-11 | 2016-03-19 |  |  |  |  |  |
| P-CS-SR13 |  | Material Submittals of Steel Rebar Reinforcement | 4d | 2014-10-11 | 2014-10-14 | PQ-CS-C-12 SS | 0d |  |  | Material Submittals [60 h] |
| P-CS-SR-23 |  | Material review & Approval of Steel Rebar Reinforcement | 10d | 2014-10-14 | 2014-10-25 | P-CS-SR13 SS+3d, P-CS-SR13 FF+3d | 0d |  |  | Material Approval [40 h] |
| P-CS-SR-33 |  | P.O of Steel Rebar Reinforcement | 1d | 2014-10-26 | 2014-10-26 | P-CS-SR-23 | 0d |  |  | Purchase Order [20 h] |
|  | 1 | **Delivery of Steel reinforcement - Slab / Columns / Walls** |  | 2014-10-27 | 2016-03-19 |  |  |  |  |  |
| P-CS-SR-53 |  | Lead time & Delivery Steel Rebar Reinforcement for Basement 3 - Lower Raft | 6d | 2014-10-27 | 2014-11-02 | P-CS-SR-33, SD-CS-B3-12 SS+7d | 0d |  | *APB - 6 D week + Qatar Holiday |  |
| P-CS-SR-43 |  | Lead time & Delivery Steel Rebar Reinforcement for Basement 3 - Raft, Columns & Walls | 7d | 2014-11-03 | 2014-11-09 | P-CS-SR-33, SD-CS-B3-12 SS+7d, SD-CS-L0-1092 SF+4d, SD-CS-L0-1072 SS+4d, P-CS-SR-53 | 17d | 0d | * JWM - 7 Days per week with no holidays | Lead Time & Delivery [20 h] |
| P-CS-SR-293 |  | Lead time & Delivery Steel Rebar Reinforcement for Basement 2 - Slab, Columns & Walls | 7d | 2014-11-10 | 2014-11-16 | SD-CS-B3-02 SS, P-CS-SR-43 | 17d |  | * JWM - 7 Days per week with no holidays | Lead Time & Delivery [20 h] |
| P-CS-SR-303 |  | Lead time & Delivery Steel Rebar Reinforcement for Basement 1 - Slab, Columns & Walls | 7d | 2014-11-21 | 2014-11-27 | SD-CS-B2-32 | 13d |  | * JWM - 7 Days per week with no holidays | Lead Time & Delivery [20 h] |
| P-CS-SR-323 |  | Lead time & Delivery Steel Rebar Reinforcement for Mezzanine Level - Slab, Columns & Walls | 21d | 2014-12-01 | 2014-12-21 | SD-CS-GF-32 | 30d | 19d | * JWM - 7 Days per week with no holidays | Lead Time & Delivery [20 h] |
| P-CS-SR-333 |  | Lead time & Delivery Steel Rebar Reinforcement for Level 1 - Slab, Columns & Walls | 21d | 2014-12-10 | 2014-12-30 | SD-CS-L1-52 | 32d | 17d | * JWM - 7 Days per week with no holidays | Lead Time & Delivery [20 h] |
| P-CS-SR-313 |  | Lead time & Delivery Steel Rebar Reinforcement for Ground Floor - Slab, Columns & Walls | 21d | 2014-12-12 | 2015-01-01 | SD-CS-B1-32, SD-CS-L4-1112, SD-CS-L4-1092 | 5d |  | * JWM - 7 Days per week with no holidays | Lead Time & Delivery [20 h] |
| P-CS-SR-343 |  | Lead time & Delivery Steel Rebar Reinforcement for Level 2 - Slab, Columns & Walls | 21d | 2014-12-21 | 2015-01-10 | SD-CS-L2-72 | 28d | 13d | * JWM - 7 Days per week with no holidays | Lead Time & Delivery [20 h] |
| P-CS-SR-353 |  | Lead time & Delivery Steel Rebar Reinforcement for Level 3 - Slab, Columns & Walls | 21d | 2014-12-30 | 2015-01-19 | SD-CS-L3-92 | 27d | 11d | * JWM - 7 Days per week with no holidays | Lead Time & Delivery [20 h] |
| P-CS-SR-363 |  | Lead time & Delivery Steel Rebar Reinforcement for Level 4 - Slab, Columns & Walls | 21d | 2015-01-18 | 2015-02-07 | SD-CS-L4-112, SD-CS-L17-1132, SD-CS-L17-1112 | 15d | 0d | * JWM - 7 Days per week with no holidays | Lead Time & Delivery [20 h] |
| P-CS-SR-373 |  | Lead time & Delivery Steel Rebar Reinforcement for Level 5 - Slab, Columns & Walls | 21d | 2015-01-18 | 2015-02-07 | SD-CS-L5-132 | 22d | 8d | * JWM - 7 Days per week with no holidays | Lead Time & Delivery [20 h] |
| P-CS-SR-383 |  | Lead time & Delivery Steel Rebar Reinforcement for Level 6 - Slab, Columns & Walls | 21d | 2015-01-27 | 2015-02-16 | SD-CS-L6-152 | 26d | 6d | * JWM - 7 Days per week with no holidays | Lead Time & Delivery [20 h] |
| P-CS-SR-393 |  | Lead time & Delivery Steel Rebar Reinforcement for Level 7 - Slab, Columns & Walls | 21d | 2015-02-05 | 2015-02-25 | SD-CS-L7-172 | 24d | 4d | * JWM - 7 Days per week with no holidays | Lead Time & Delivery [20 h] |
| P-CS-SR-403 |  | Lead time & Delivery Steel Rebar Reinforcement for Level 8 - Slab, Columns & Walls | 21d | 2015-02-12 | 2015-03-04 | SD-CS-L8-192 | 24d | 4d | * JWM - 7 Days per week with no holidays | Lead Time & Delivery [20 h] |
| P-CS-SR-413 |  | Lead time & Delivery Steel Rebar Reinforcement for Level 9 - Slab, Columns & Walls | 21d | 2015-02-18 | 2015-03-10 | SD-CS-L9-212 | 25d | 5d | * JWM - 7 Days per week with no holidays | Lead Time & Delivery [20 h] |
| P-CS-SR-423 |  | Lead time & Delivery Steel Rebar Reinforcement for Level 10 - Slab, Columns & Walls | 21d | 2015-02-24 | 2015-03-16 | SD-CS-L10-232 | 26d | 6d | * JWM - 7 Days per week with no holidays | Lead Time & Delivery [20 h] |
| P-CS-SR-433 |  | Lead time & Delivery Steel Rebar Reinforcement for Level 11 - Slab, Columns & Walls | 21d | 2015-03-02 | 2015-03-22 | SD-CS-L11-252 | 27d | 7d | * JWM - 7 Days per week with no holidays | Lead Time & Delivery [20 h] |
| P-CS-SR-443 |  | Lead time & Delivery Steel Rebar Reinforcement for Level 12 - Slab, Columns & Walls | 21d | 2015-03-08 | 2015-03-28 | SD-CS-L12-272 | 28d | 8d | * JWM - 7 Days per week with no holidays | Lead Time & Delivery [20 h] |
| P-CS-SR-453 |  | Lead time & Delivery Steel Rebar Reinforcement for Level 13 - Slab, Columns & Walls | 21d | 2015-03-13 | 2015-04-02 | SD-CS-L13-292 | 30d | 10d | * JWM - 7 Days per week with no holidays | Lead Time & Delivery [20 h] |
| P-CS-SR-463 |  | Lead time & Delivery Steel Rebar Reinforcement for Level 14 - Slab, Columns & Walls | 21d | 2015-03-19 | 2015-04-08 | SD-CS-L14-312 | 31d | 11d | * JWM - 7 Days per week with no holidays | Lead Time & Delivery [20 h] |
| P-CS-SR-473 |  | Lead time & Delivery Steel Rebar Reinforcement for Level 15 - Slab, Columns & Walls | 21d | 2015-03-25 | 2015-04-14 | SD-CS-L15-332 | 32d | 12d | * JWM - 7 Days per week with no holidays | Lead Time & Delivery [20 h] |
| P-CS-SR-493 |  | Lead time & Delivery Steel Rebar Reinforcement for Level 16 - Slab, Columns & Walls | 21d | 2015-03-31 | 2015-04-20 | SD-CS-L16-352 | 33d | 13d | * JWM - 7 Days per week with no holidays | Lead Time & Delivery [20 h] |
| P-CS-SR-543 |  | Lead time & Delivery Steel Rebar Reinforcement for Level 17 - Slab, Columns & Walls | 21d | 2015-04-06 | 2015-04-26 | SD-CS-L17-372, SD-CS-L51-1212, SD-CS-L51-1132 | 34d | 14d | * JWM - 7 Days per week with no holidays | Lead Time & Delivery [20 h] |
| P-CS-SR-553 |  | Lead time & Delivery Steel Rebar Reinforcement for Level 18 - Slab, Columns & Walls | 21d | 2015-04-12 | 2015-05-02 | SD-CS-L18-392 | 36d | 15d | * JWM - 7 Days per week with no holidays | Lead Time & Delivery [20 h] |
| P-CS-SR-563 |  | Lead time & Delivery Steel Rebar Reinforcement for Level 19 - Slab, Columns & Walls | 21d | 2015-04-17 | 2015-05-07 | SD-CS-L19-412 | 39d | 17d | * JWM - 7 Days per week with no holidays | Lead Time & Delivery [20 h] |
| P-CS-SR-573 |  | Lead time & Delivery Steel Rebar Reinforcement for Level 20 - Slab, Columns & Walls | 21d | 2015-04-23 | 2015-05-13 | SD-CS-L20-432 | 40d | 18d | * JWM - 7 Days per week with no holidays | Lead Time & Delivery [20 h] |
| P-CS-SR-583 |  | Lead time & Delivery Steel Rebar Reinforcement for Level 21 - Slab, Columns & Walls | 21d | 2015-05-03 | 2015-05-23 | SD-CS-L21-452 | 37d | 15d | * JWM - 7 Days per week with no holidays | Lead Time & Delivery [20 h] |
| P-CS-SR-593 |  | Lead time & Delivery Steel Rebar Reinforcement for Level 22 - Slab, Columns & Walls | 21d | 2015-05-12 | 2015-06-01 | SD-CS-L22-472 | 35d | 13d | * JWM - 7 Days per week with no holidays | Lead Time & Delivery [20 h] |
| P-CS-SR-603 |  | Lead time & Delivery Steel Rebar Reinforcement for Level 23 - Slab, Columns & Walls | 21d | 2015-05-21 | 2015-06-10 | SD-CS-L23-492 | 33d | 11d | * JWM - 7 Days per week with no holidays | Lead Time & Delivery [20 h] |
| P-CS-SR-613 |  | Lead time & Delivery Steel Rebar Reinforcement for Level 24 - Slab, Columns & Walls | 21d | 2015-05-31 | 2015-06-20 | SD-CS-L24-512 | 32d | 8d | * JWM - 7 Days per week with no holidays | Lead Time & Delivery [20 h] |
| P-CS-SR-623 |  | Lead time & Delivery Steel Rebar Reinforcement for Level 25 - Slab, Columns & Walls | 21d | 2015-06-09 | 2015-06-29 | SD-CS-L25-532 | 30d | 6d | * JWM - 7 Days per week with no holidays | Lead Time & Delivery [20 h] |
| P-CS-SR-633 |  | Lead time & Delivery Steel Rebar Reinforcement for Level 26 - Slab, Columns & Walls | 21d | 2015-06-18 | 2015-07-08 | SD-CS-L26-552 | 28d | 4d | * JWM - 7 Days per week with no holidays | Lead Time & Delivery [20 h] |
| P-CS-SR-643 |  | Lead time & Delivery Steel Rebar Reinforcement for Level 27 - Slab, Columns & Walls | 21d | 2015-06-28 | 2015-07-18 | SD-CS-L27-572 | 25d | 3d | * JWM - 7 Days per week with no holidays | Lead Time & Delivery [20 h] |
| P-CS-SR-653 |  | Lead time & Delivery Steel Rebar Reinforcement for Level 28 - Slab, Columns & Walls | 21d | 2015-07-07 | 2015-07-27 | SD-CS-L28-592 | 23d | 1d | * JWM - 7 Days per week with no holidays | Lead Time & Delivery [20 h] |
| P-CS-SR-663 |  | Lead time & Delivery Steel Rebar Reinforcement for Level 29 - Slab, Columns & Walls | 21d | 2015-07-19 | 2015-08-08 | SD-CS-L29-612 | 18d | 0d | * JWM - 7 Days per week with no holidays | Lead Time & Delivery [20 h] |
| P-CS-SR-673 |  | Lead time & Delivery Steel Rebar Reinforcement for Level 30 - Slab, Columns & Walls | 21d | 2015-07-28 | 2015-08-17 | SD-CS-L30-632, SD-CS-L51-1232, SD-CS-L51-1152 | 16d | 0d | * JWM - 7 Days per week with no holidays | Lead Time & Delivery [20 h] |
| P-CS-SR-683 |  | Lead time & Delivery Steel Rebar Reinforcement for Level 31 - Slab, Columns & Walls | 21d | 2015-07-31 | 2015-08-20 | SD-CS-L31-652 | 20d | 4d | * JWM - 7 Days per week with no holidays | Lead Time & Delivery [20 h] |
| P-CS-SR-693 |  | Lead time & Delivery Steel Rebar Reinforcement for Level 32 - Slab, Columns & Walls | 21d | 2015-08-10 | 2015-08-30 | SD-CS-L32-672 | 17d | 1d | * JWM - 7 Days per week with no holidays | Lead Time & Delivery [20 h] |
| P-CS-SR-703 |  | Lead time & Delivery Steel Rebar Reinforcement for Level 33 - Slab, Columns & Walls | 21d | 2015-08-19 | 2015-09-08 | SD-CS-L33-692 | 19d | 0d | * JWM - 7 Days per week with no holidays | Lead Time & Delivery [20 h] |
| P-CS-SR-713 |  | Lead time & Delivery Steel Rebar Reinforcement for Level 34 - Slab, Columns & Walls | 21d | 2015-08-28 | 2015-09-17 | SD-CS-L34-712 | 17d | 1d | * JWM - 7 Days per week with no holidays | Lead Time & Delivery [20 h] |
| P-CS-SR-723 |  | Lead time & Delivery Steel Rebar Reinforcement for Level 35 - Slab, Columns & Walls | 21d | 2015-09-07 | 2015-09-27 | SD-CS-L35-732, SD-CS-L51-1252, SD-CS-L51-1172 | 14d | 1d | * JWM - 7 Days per week with no holidays | Lead Time & Delivery [20 h] |
| P-CS-SR-733 |  | Lead time & Delivery Steel Rebar Reinforcement for Level 36 - Slab, Columns & Walls | 21d | 2015-09-16 | 2015-10-06 | SD-CS-L36-752 | 12d | 0d | * JWM - 7 Days per week with no holidays | Lead Time & Delivery [20 h] |
| P-CS-SR-743 |  | Lead time & Delivery Steel Rebar Reinforcement for Level 37 - Slab, Columns & Walls | 21d | 2015-09-29 | 2015-10-19 | SD-CS-L37-772 | 6d | 0d | * JWM - 7 Days per week with no holidays | Lead Time & Delivery [20 h] |
| P-CS-SR-753 |  | Lead time & Delivery Steel Rebar Reinforcement for Level 38 - Slab, Columns & Walls | 21d | 2015-10-08 | 2015-10-28 | SD-CS-L38-792 | 6d | 0d | * JWM - 7 Days per week with no holidays | Lead Time & Delivery [20 h] |
| P-CS-SR-763 |  | Lead time & Delivery Steel Rebar Reinforcement for Level 39 - Slab, Columns & Walls | 21d | 2015-10-18 | 2015-11-07 | SD-CS-L39-812 | 37d |  | * JWM - 7 Days per week with no holidays | Lead Time & Delivery [20 h] |
| P-CS-SR-773 |  | Lead time & Delivery Steel Rebar Reinforcement for Level 40 - Slab, Columns & Walls | 21d | 2015-10-27 | 2015-11-16 | SD-CS-L40-832 | 36d |  | * JWM - 7 Days per week with no holidays | Lead Time & Delivery [20 h] |
| P-CS-SR-783 |  | Lead time & Delivery Steel Rebar Reinforcement for Level 41 - Slab, Columns & Walls | 21d | 2015-11-05 | 2015-11-25 | SD-CS-L41-852 | 34d |  | * JWM - 7 Days per week with no holidays | Lead Time & Delivery [20 h] |
| P-CS-SR-793 |  | Lead time & Delivery Steel Rebar Reinforcement for Level 42 - Slab, Columns & Walls | 21d | 2015-11-15 | 2015-12-05 | SD-CS-L42-872 | 31d |  | * JWM - 7 Days per week with no holidays | Lead Time & Delivery [20 h] |
| P-CS-SR-803 |  | Lead time & Delivery Steel Rebar Reinforcement for Level 43 - Slab, Columns & Walls | 21d | 2015-11-24 | 2015-12-14 | SD-CS-L43-892 | 29d |  | * JWM - 7 Days per week with no holidays | Lead Time & Delivery [20 h] |

| ID | WBS | Activity | Duration | Start | Finish | Predecessors | Total float | Free float | Calendar | Resources |
| --- | --- | --- | --- | --- | --- | --- | --- | --- | --- | --- |
| P-CS-SR-813 |  | Lead time & Delivery Steel Rebar Reinforcement for Level 44 - Slab, Columns & Walls | 21d | 2015-12-03 | 2015-12-23 | SD-CS-L44-912 | 27d |  | * JWM - 7 Days per week with no holidays | Lead Time & Delivery [20 h] |
| P-CS-SR-823 |  | Lead time & Delivery Steel Rebar Reinforcement for Level 45 - Slab, Columns & Walls | 21d | 2015-12-13 | 2016-01-02 | SD-CS-L45-932, SD-CS-L51-1272, SD-CS-L51-1192 | 24d |  | * JWM - 7 Days per week with no holidays | Lead Time & Delivery [20 h] |
| P-CS-SR-833 |  | Lead time & Delivery Steel Rebar Reinforcement for Level 46 - Slab, Columns & Walls | 21d | 2015-12-23 | 2016-01-12 | SD-CS-L46-952 | 21d |  | * JWM - 7 Days per week with no holidays | Lead Time & Delivery [20 h] |
| P-CS-SR-843 |  | Lead time & Delivery Steel Rebar Reinforcement for Level 47 - Slab, Columns & Walls | 21d | 2016-01-01 | 2016-01-21 | SD-CS-L47-972 | 20d |  | * JWM - 7 Days per week with no holidays | Lead Time & Delivery [20 h] |
| P-CS-SR-853 |  | Lead time & Delivery Steel Rebar Reinforcement for Level 48 - Slab, Columns & Walls | 21d | 2016-01-11 | 2016-01-31 | SD-CS-L48-992 | 17d |  | * JWM - 7 Days per week with no holidays | Lead Time & Delivery [20 h] |
| P-CS-SR-863 |  | Lead time & Delivery Steel Rebar Reinforcement for Level 49 - Slab, Columns & Walls | 21d | 2016-01-20 | 2016-02-09 | SD-CS-L49-1012 | 15d |  | * JWM - 7 Days per week with no holidays | Lead Time & Delivery [20 h] |
| P-CS-SR-873 |  | Lead time & Delivery Steel Rebar Reinforcement for Level 50 - Slab, Columns & Walls | 21d | 2016-01-29 | 2016-02-18 | SD-CS-L50-1032 | 15d |  | * JWM - 7 Days per week with no holidays | Lead Time & Delivery [20 h] |
| P-CS-SR-883 |  | Lead time & Delivery Steel Rebar Reinforcement for Level 51 - Slab, Columns & Walls | 21d | 2016-02-08 | 2016-02-28 | SD-CS-L51-1052 | 12d |  | * JWM - 7 Days per week with no holidays | Lead Time & Delivery [20 h] |
| P-CS-SR-893 |  | Lead time & Delivery Steel Rebar Reinforcement for Lower Roof - Slab, Columns & Walls | 21d | 2016-02-18 | 2016-03-09 | SD-CS-L51-1412 | 9d |  | * JWM - 7 Days per week with no holidays | Lead Time & Delivery [20 h] |
| P-CS-SR-903 |  | Lead time & Delivery Steel Rebar Reinforcement for Top Roof - Slab, Columns & Walls | 21d | 2016-02-28 | 2016-03-19 | SD-CS-L51-1432 | 6d |  | * JWM - 7 Days per week with no holidays | Lead Time & Delivery [20 h] |
|  | 3 | **Water Proofing** |  | 2014-10-02 | 2014-10-24 |  |  |  |  |  |
| P-CS-C-53 |  | Material Submittals of Water Proofing membrane & Protection Board | 4d | 2014-10-02 | 2014-10-09 | G-CM-001 | 0d |  |  | Material Submittals [60 h] |
| P-CS-C-63 |  | Material review & Approval of Water Proofing membrane & Protection Board | 10d | 2014-10-11 | 2014-10-21 | P-CS-C-53 | 0d |  |  | Material Approval [40 h] |
| P-CS-C-73 |  | P.O of Water Proofing membrane & Protection Board | 1d | 2014-10-22 | 2014-10-22 | P-CS-C-63 | 0d |  |  | Purchase Order [20 h] |
| P-CS-C-83 |  | Lead Time & Delivery of Water Proofing membrane & Protection Board | 2d | 2014-10-23 | 2014-10-24 | P-CS-C-73 | 0d |  | * JWM - 7 Days per week with no holidays | Lead Time & Delivery [600 h] |
|  | 5 | **Post tension Duct** |  | 2014-10-27 | 2014-12-28 |  |  |  |  |  |
| P-CS-C-693 |  | Material Submittals of Post tension Duct | 30d | 2014-10-27 | 2014-11-30 | PQ-CS-C-2252 SS | 25d | 0d |  | Material Submittals [60 h] |
| P-CS-C-703 |  | Material review & Approval of Post tension Duct | 30d | 2014-11-08 | 2014-12-11 | P-CS-C-693 SS+10d, P-CS-C-693 FF+10d | 25d | 0d |  | Material Approval [40 h] |
| P-CS-C-713 |  | P.O of Post tension Duct | 2d | 2014-12-13 | 2014-12-14 | P-CS-C-703 | 25d | 0d |  | Purchase Order [20 h] |
| P-CS-C-723 |  | Lead Time & Delivery of Post tension Duct | 14d | 2014-12-15 | 2014-12-28 | P-CS-C-713 | 30d |  | * JWM - 7 Days per week with no holidays | Lead Time & Delivery [600 h] |
|  | 4 | **Anchor Bolts** |  | 2014-10-02 | 2014-11-11 |  |  |  |  |  |
| P-CS-C-93 |  | Material Submittals of Anchor Bolts | 14d | 2014-10-02 | 2014-10-21 | G-CM-001 | 13d | 0d |  | Material Submittals [60 h] |
| P-CS-C-103 |  | Material review & Approval of Anchor Bolts | 14d | 2014-10-18 | 2014-11-02 | P-CS-C-93 SS+10d, P-CS-C-93 FF+10d | 13d | 0d |  | Material Approval [40 h] |
| P-CS-C-113 |  | P.O of Anchor Bolts | 2d | 2014-11-03 | 2014-11-04 | P-CS-C-103 | 13d | 0d |  | Purchase Order [20 h] |
| P-CS-C-123 |  | Lead Time & Delivery of Anchor Bolts | 7d | 2014-11-05 | 2014-11-11 | P-CS-C-113 | 15d |  | * JWM - 7 Days per week with no holidays | Lead Time & Delivery [600 h] |

| ID | WBS | Activity | Duration | Start | Finish | Predecessors | Total float | Free float | Calendar | Resources | Cost |
| --- | --- | --- | --- | --- | --- | --- | --- | --- | --- | --- | --- |
|  | 6 | **Concrete Blocks** |  | 2014-10-02 | 2014-10-26 |  |  |  |  |  |  |
| P-CS-C-213 |  | Material Submittals of Concrete Blocks | 5d | 2014-10-02 | 2014-10-11 | G-CM-001 | 0d |  |  | Material Submittals [60 h] |  |
| P-CS-C-223 |  | Material review & Approval of Concrete Blocks | 10d | 2014-10-12 | 2014-10-22 | P-CS-C-213 | 0d |  |  | Material Approval [40 h] |  |
| P-CS-C-233 |  | P.O of Concrete Blocks | 1d | 2014-10-23 | 2014-10-23 | P-CS-C-223 | 0d |  |  | Purchase Order [20 h] |  |
| P-CS-C-243 |  | First Delivery of Concrete Blocks | 2d | 2014-10-25 | 2014-10-26 | P-CS-C-233 | 0d |  |  |  |  |
|  | 8 | **Block & Plastering accessories** |  | 2014-12-01 | 2015-03-21 |  |  |  |  |  |  |
| P-CS-C-253 |  | Material Submittals of Block & Plastering accessories | 14d | 2014-12-01 | 2014-12-16 | PQ-CS-C-72 | 54d | 0d |  | Material Submittals [60 h] |  |
| P-CS-C-263 |  | Material review & Approval of Block & Plastering accessories | 14d | 2014-12-13 | 2014-12-29 | P-CS-C-253 SS+10d, P-CS-C-253 FF+10d | 54d | 0d |  | Material Approval [40 h] |  |
| P-CS-C-273 |  | P.O of Block & Plastering accessories | 2d | 2014-12-30 | 2014-12-31 | P-CS-C-263 | 54d | 0d |  | Purchase Order [20 h] |  |
| P-CS-C-283 |  | Lead Time & Delivery of Block & Plastering accessories | 80d | 2015-01-01 | 2015-03-21 | P-CS-C-273 | 65d | 0d | * JWM - 7 Days per week with no holidays | Lead Time & Delivery [600 h] |  |
|  | 1 | **Fire Proofing** |  | 2015-03-02 | 2015-07-29 |  |  |  |  |  |  |
| P-CS-C-613 |  | Material Submittals of FIre Proofing | 14d | 2015-03-02 | 2015-03-17 | PQ-CS-C-372 | 169d | 0d |  | Material Submittals [60 h] | 30,992.05 |
| P-CS-C-623 |  | Material review & Approval of FIre Proofing | 14d | 2015-03-14 | 2015-03-29 | P-CS-C-613 SS+10d, P-CS-C-613 FF+10d | 169d | 0d |  | Material Approval [40 h] | 30,992.05 |
| P-CS-C-633 |  | P.O of Fire Proofing | 2d | 2015-03-30 | 2015-03-31 | P-CS-C-623 | 169d | 0d |  | Purchase Order [20 h] |  |
| P-CS-C-643 |  | Lead Time & Delivery of Fire Proofing | 120d | 2015-04-01 | 2015-07-29 | P-CS-C-633 | 203d | 114d | * JWM - 7 Days per week with no holidays | Lead Time & Delivery [600 h] |  |
|  | 5 | **Structural Steel** |  | 2014-11-03 | 2015-12-21 |  |  |  |  |  |  |
|  | 6 | **Floor Decking from Ground floor to third floor** |  | 2014-11-03 | 2015-04-12 |  |  |  |  |  |  |
| P-CS-C-533 |  | Material Submittals of Structural Steel for Steel Decking | 14d | 2014-11-03 | 2014-11-18 | PQ-CS-C-92 | 10d | 0d |  | Material Submittals [60 h] |  |
| P-CS-C-543 |  | Material review & Approval of Structural Steel for Steel Decking | 14d | 2014-11-15 | 2014-11-30 | P-CS-C-533 SS+10d, P-CS-C-533 FF+10d | 10d | 9d |  | Material Approval [40 h] |  |
| P-CS-C-553 |  | P.O of Structural Steel for Steel Decking | 2d | 2014-12-11 | 2014-12-13 | P-CS-C-543, SD-CS-L0-1252 | 1d | 0d |  | Purchase Order [20 h] |  |
| P-CS-C-563 |  | Lead Time & Delivery of Structural Steel for Steel Decking | 120d | 2014-12-14 | 2015-04-12 | P-CS-C-553 | 1d | 0d | * JWM - 7 Days per week with no holidays | Lead Time & Delivery [600 h] |  |
|  | 3 | **Main Lobby - Truss Framing** |  | 2014-11-03 | 2015-03-28 |  |  |  |  |  |  |
| P-CS-C-413 |  | Material Submittals of Structural Steel for Truss Framing within the main Lobby | 14d | 2014-11-03 | 2014-11-18 | PQ-CS-C-92, PQ-CS-C-92 FF, P-CS-C-533 SS | 42d | 0d |  | Material Submittals [60 h] |  |
| P-CS-C-423 |  | Material review & Approval of Structural Steel for Truss Framing within the main Lobby | 14d | 2014-11-15 | 2014-11-30 | P-CS-C-413 SS+10d, P-CS-C-413 FF+10d | 42d | 28d |  | Material Approval [40 h] |  |
| P-CS-C-433 |  | P.O of Structural Steel for Truss Framing within the main Lobby | 2d | 2015-01-04 | 2015-01-05 | P-CS-C-423, SD-CS-L0-1192 | 14d | 0d |  | Purchase Order [20 h] |  |
| P-CS-C-443 |  | Lead Time & Delivery of Structural Steel for Truss Framing within the main Lobby | 82d | 2015-01-06 | 2015-03-28 | P-CS-C-433 | 16d | 0d | * JWM - 7 Days per week with no holidays | Lead Time & Delivery [600 h] |  |

Notes:
- P-CS-C-613: Expenses: FP 30992
- P-CS-C-623: Expenses: FP 30992

| ID | WBS | Activity | Duration | Start | Finish | Predecessors | Total float | Free float | Calendar | Resources |
| --- | --- | --- | --- | --- | --- | --- | --- | --- | --- | --- |
|  | 2 | **Main Canopy - Facade Canopy** |  | 2014-11-03 | 2015-03-29 |  |  |  |  |  |
| P-CS-C-373 |  | Material Submittals of Structural Steel for Facade Canopy | 14d | 2014-11-03 | 2014-11-18 | PQ-CS-C-92, P-CS-C-413 SS | 46d | 0d |  | Material Submittals [60 h] |
| P-CS-C-383 |  | Material review & Approval of Structural Steel for the Facade Canopy | 14d | 2014-11-15 | 2014-11-30 | P-CS-C-373 SS+10d, P-CS-C-373 FF+10d | 110d | 16d |  | Material Approval [40 h] |
| P-CS-C-393 |  | P.O of Structural Steel for the Facade Canopy | 2d | 2014-12-21 | 2014-12-22 | P-CS-C-383, SD-CS-L0-1152 | 94d | 0d |  | Purchase Order [20 h] |
| P-CS-C-403 |  | Lead Time & Delivery of Structural Steel for the Facade Canopy | 97d | 2014-12-23 | 2015-03-29 | P-CS-C-393 | 111d | 12d | * JWM - 7 Days per week with no holidays | Lead Time & Delivery [600 h] |
|  | 1 | **Entrance Canopy** |  | 2014-11-19 | 2015-04-21 |  |  |  |  |  |
| P-CS-C-333 |  | Material Submittals of Structural Steel & Cable Rod for Entrance Canopy | 14d | 2014-11-19 | 2014-12-04 | PQ-CS-C-92, P-CS-C-373 | 46d | 0d |  | Material Submittals [60 h] |
| P-CS-C-343 |  | Material review & Approval of Structural Steel & Cable Rod for the Entrance Canopy | 14d | 2014-12-01 | 2014-12-16 | P-CS-C-333 SS+10d, P-CS-C-333 FF+10d | 46d | 2d |  | Material Approval [40 h] |
| P-CS-C-353 |  | P.O of Structural Steel & Cable Rod for the Entrance Canopy | 2d | 2014-12-21 | 2014-12-22 | P-CS-C-343, SD-CS-L0-1172 | 44d | 0d |  | Purchase Order [20 h] |
| P-CS-C-363 |  | Lead Time & Delivery of Structural Steel & Cable Rod for the Entrance Canopy | 120d | 2014-12-23 | 2015-04-21 | P-CS-C-353 | 53d | 0d | * JWM - 7 Days per week with no holidays | Lead Time & Delivery [600 h] |
|  | 9 | **Structural Steel Columns at 33rd Floor** |  | 2015-02-14 | 2015-06-13 |  |  |  |  |  |
| P-CS-C-133 |  | Material Submittals of Structural Steel columns | 14d | 2015-02-14 | 2015-03-01 | PQ-CS-C-212, P-CS-C-333 | 86d | 0d |  | Material Submittals [60 h] |
| P-CS-C-143 |  | Material review & Approval of Structural Steel Columns | 14d | 2015-02-25 | 2015-03-12 | P-CS-C-133 SS+10d, P-CS-C-133 FF+10d | 122d | 0d |  | Material Approval [40 h] |
| P-CS-C-153 |  | P.O of Structural Steel columns | 2d | 2015-03-14 | 2015-03-15 | P-CS-C-143, SD-CS-L0-1132 | 122d | 0d |  | Purchase Order [20 h] |
| P-CS-C-163 |  | Lead Time & Delivery of Structural Steel columns | 90d | 2015-03-16 | 2015-06-13 | P-CS-C-153 | 144d |  | * JWM - 7 Days per week with no holidays | Lead Time & Delivery [600 h] |
|  | 5 | **Swimming Pool Decking** |  | 2015-03-02 | 2015-07-29 |  |  |  |  |  |
| P-CS-C-493 |  | Material Submittals of Structural Steel for Swimming Pool Decking | 14d | 2015-03-02 | 2015-03-17 | PQ-CS-C-92, P-CS-C-133 | 86d | 0d |  | Material Submittals [60 h] |
| P-CS-C-503 |  | Material review & Approval of Structural Steel for Swimmiing Pool Deckingbby | 14d | 2015-03-14 | 2015-03-29 | P-CS-C-493 SS+10d, P-CS-C-493 FF+10d | 90d | 0d |  | Material Approval [40 h] |
| P-CS-C-513 |  | P.O of Structural Steel for Swimming Pool Decking | 2d | 2015-03-30 | 2015-03-31 | P-CS-C-503, SD-CS-L0-1232 | 90d | 0d |  | Purchase Order [20 h] |
| P-CS-C-523 |  | Lead Time & Delivery of Structural Steel for for Swimmiing Pool Decking | 120d | 2015-04-01 | 2015-07-29 | P-CS-C-513 | 107d | 104d | * JWM - 7 Days per week with no holidays | Lead Time & Delivery [600 h] |
|  | 7 | **Pergola Support** |  | 2015-03-18 | 2015-07-20 |  |  |  |  |  |
| P-CS-C-573 |  | Material Submittals of Structural Steel & Cable Rod for Pergola Support | 14d | 2015-03-18 | 2015-04-02 | PQ-CS-C-92 SS, P-CS-C-493 | 86d | 0d |  | Material Submittals [60 h] |
| P-CS-C-583 |  | Material review & Approval of Structural Steel & Cable Rod for Pergola Support | 14d | 2015-03-30 | 2015-04-14 | P-CS-C-573 SS+10d, P-CS-C-573 FF+10d | 194d | 4d |  | Material Approval [40 h] |
| P-CS-C-593 |  | P.O of Structural Steel & Cable Rod for Pergola Support | 2d | 2015-04-20 | 2015-04-21 | P-CS-C-583, SD-CS-L0-1272 | 190d | 0d |  | Purchase Order [20 h] |
| P-CS-C-603 |  | Lead Time & Delivery of Structural Steel & Cable Rod for Pergola Support | 90d | 2015-04-22 | 2015-07-20 | P-CS-C-593 | 228d | 131d | * JWM - 7 Days per week with no holidays | Lead Time & Delivery [600 h] |

| ID | WBS | Activity | Duration | Start | Finish | Predecessors | Total float | Free float | Calendar | Resources |
| --- | --- | --- | --- | --- | --- | --- | --- | --- | --- | --- |
|  | 4 | **Roof Crown Support** |  | 2015-04-27 | 2015-08-04 |  |  |  |  |  |
| P-CS-C-453 |  | Material Submittals of Structural Steel for Roof Crown Support | 14d | 2015-04-27 | 2015-05-12 | PQ-CS-C-92, P-CS-C-573 FS+20d | 86d | 0d |  | Material Submittals [60 h] |
| P-CS-C-463 |  | Material review & Approval of Structural Steel for Roof Crown Support | 14d | 2015-05-09 | 2015-05-24 | P-CS-C-453 SS+10d, P-CS-C-453 FF+10d | 206d | 0d |  | Material Approval [40 h] |
| P-CS-C-473 |  | P.O of Structural Steel for Roof Crown Support | 2d | 2015-05-25 | 2015-05-26 | P-CS-C-463, SD-CS-L0-1212 | 206d | 0d |  | Purchase Order [20 h] |
| P-CS-C-483 |  | Lead Time & Delivery of Structural Steel for Roof Crown Support | 70d | 2015-05-27 | 2015-08-04 | P-CS-C-473 | 248d | 239d | * JWM - 7 Days per week with no holidays | Lead Time & Delivery [600 h] |
|  | 8 | **Catwalk structures** |  | 2015-09-09 | 2015-12-21 |  |  |  |  |  |
| P-CS-C-653 |  | Material Submittals of Catwalks Structure | 14d | 2015-09-09 | 2015-09-28 | PQ-CS-C-92 SS, P-CS-C-453 FS+100d | 86d | 0d |  | Material Submittals [60 h] |
| P-CS-C-663 |  | Material review & Approval of Catwalks Structure | 14d | 2015-09-24 | 2015-10-10 | P-CS-C-653 SS+10d, P-CS-C-653 FF+10d | 86d | 0d |  | Material Approval [40 h] |
| P-CS-C-673 |  | P.O of Catwalks Structure | 2d | 2015-10-11 | 2015-10-12 | P-CS-C-663 | 86d | 0d |  | Purchase Order [20 h] |
| P-CS-C-683 |  | Lead TIme & Delivery of Catwalks Structure | 70d | 2015-10-13 | 2015-12-21 | P-CS-C-673 | 101d | 0d | * JWM - 7 Days per week with no holidays | Lead Time & Delivery [600 h] |
|  | 4 | **Facade** |  | 2014-12-09 | 2015-06-26 |  |  |  |  |  |
|  | 2 | **Curtain Wall Farme** |  | 2014-12-09 | 2015-05-27 |  |  |  |  |  |
| P-MEP-FF-3053 |  | Material Submittals of Curtain Wall Frame | 30d | 2014-12-09 | 2015-01-13 | PQ-CS-C-752 | 25d | 0d |  | Material Submittals [60 h] |
| P-MEP-FF-3063 |  | Material review & Approval of Curtain Wall Frame | 30d | 2014-12-22 | 2015-01-25 | P-MEP-FF-3053 SS+10d, P-MEP-FF-3053 FF+10d | 50d | 0d |  | Material Approval [40 h] |
| P-MEP-FF-3073 |  | P.O of Curtain Wall Frame | 2d | 2015-01-26 | 2015-01-27 | P-MEP-FF-3063, SD-CS-L0-1292 | 50d | 0d |  | Purchase Order [20 h] |
| P-MEP-FF-3083 |  | Lead Time & Delivery of Curtain Wall Frame | 120d | 2015-01-28 | 2015-05-27 | P-MEP-FF-3073 | 60d | 30d | * JWM - 7 Days per week with no holidays | Lead Time & Delivery [600 h] |
|  | 3 | **Curtain Wall System** |  | 2014-12-09 | 2015-05-27 |  |  |  |  |  |
| P-MEP-FF-3093 |  | Material Submittals of Curtain Wall system | 30d | 2014-12-09 | 2015-01-13 | PQ-CS-C-752, P-MEP-FF-3053 SS | 25d | 0d |  | Material Submittals [60 h] |
| P-MEP-FF-3103 |  | Material review & Approval of Curtain Wall system | 30d | 2014-12-22 | 2015-01-25 | P-MEP-FF-3093 SS+10d, P-MEP-FF-3093 FF+10d | 50d | 0d |  | Material Approval [40 h] |
| P-MEP-FF-3113 |  | P.O of Curtain Wall system | 2d | 2015-01-26 | 2015-01-27 | P-MEP-FF-3103, SD-CS-L0-1292 | 50d | 0d |  | Purchase Order [20 h] |
| P-MEP-FF-3123 |  | Lead Time & Delivery of Curtain Wall system | 120d | 2015-01-28 | 2015-05-27 | P-MEP-FF-3113 | 60d | 30d | * JWM - 7 Days per week with no holidays | Lead Time & Delivery [600 h] |
|  | 4 | **Clear Galzing** |  | 2014-12-15 | 2015-06-02 |  |  |  |  |  |
| P-MEP-FF-3133 |  | Material Submittals of Clear Glazing | 30d | 2014-12-15 | 2015-01-19 | PQ-CS-C-752, P-MEP-FF-3093 SS+5d | 25d | 0d |  | Material Submittals [60 h] |
| P-MEP-FF-3143 |  | Material review & Approval of Clear Glazing | 30d | 2014-12-28 | 2015-01-31 | P-MEP-FF-3133 SS+10d, P-MEP-FF-3133 FF+10d | 45d | 0d |  | Material Approval [40 h] |
| P-MEP-FF-3153 |  | P.O of Clear Glazing | 2d | 2015-02-01 | 2015-02-02 | P-MEP-FF-3143, SD-CS-L0-1292 | 45d | 0d |  | Purchase Order [20 h] |
| P-MEP-FF-3163 |  | Lead Time & Delivery of Clear Glazing | 120d | 2015-02-03 | 2015-06-02 | P-MEP-FF-3153 | 54d | 24d | * JWM - 7 Days per week with no holidays | Lead Time & Delivery [600 h] |

| ID | WBS | Activity | Duration | Start | Finish | Predecessors | Total float | Free float | Calendar | Resources | Cost |
| --- | --- | --- | --- | --- | --- | --- | --- | --- | --- | --- | --- |
|  | 5 | **Black Glazing** |  | 2014-12-22 | 2015-06-08 |  |  |  |  |  |  |
| P-MEP-FF-3173 |  | Material Submittals of Black Glazing | 30d | 2014-12-22 | 2015-01-25 | PQ-CS-C-752, P-MEP-FF-3133 SS+5d | 25d | 0d |  | Material Submittals [60 h] |  |
| P-MEP-FF-3183 |  | Material review & Approval of Black Glazing | 30d | 2015-01-03 | 2015-02-05 | P-MEP-FF-3173 SS+10d, P-MEP-FF-3173 FF+10d | 40d | 0d |  | Material Approval [40 h] |  |
| P-MEP-FF-3193 |  | P.O of Black Glazing | 2d | 2015-02-07 | 2015-02-08 | P-MEP-FF-3183, SD-CS-L0-1292 | 40d | 0d |  | Purchase Order [20 h] |  |
| P-MEP-FF-3203 |  | Lead Time & Delivery of Black Glazing | 120d | 2015-02-09 | 2015-06-08 | P-MEP-FF-3193 | 48d | 18d | * JWM - 7 Days per week with no holidays | Lead Time & Delivery [600 h] |  |
|  | 1 | **Stone Cladding** |  | 2014-12-28 | 2015-06-15 |  |  |  |  |  |  |
| P-MEP-FF-3213 |  | Material Submittals of Stone Cladding | 30d | 2014-12-28 | 2015-01-31 | PQ-CS-C-752, P-MEP-FF-3173 SS+5d | 25d | 0d |  | Material Submittals [60 h] |  |
| P-MEP-FF-3223 |  | Material review & Approval of Stone Cladding | 30d | 2015-01-08 | 2015-02-12 | P-MEP-FF-3213 SS+10d, P-MEP-FF-3213 FF+10d | 35d | 0d |  | Material Approval [40 h] |  |
| P-MEP-FF-3233 |  | P.O of Stone Cladding | 2d | 2015-02-14 | 2015-02-15 | P-MEP-FF-3223, SD-CS-L0-1292 | 35d | 0d |  | Purchase Order [20 h] |  |
| P-MEP-FF-3243 |  | Lead Time & Delivery of Stone Cladding | 120d | 2015-02-16 | 2015-06-15 | P-MEP-FF-3233 | 41d | 11d | * JWM - 7 Days per week with no holidays | Lead Time & Delivery [600 h] |  |
|  | 6 | **Glazed Louvred Panels** |  | 2015-01-03 | 2015-06-21 |  |  |  |  |  |  |
| P-MEP-FF-3253 |  | Material Submittals of Glazed Louvre Panels | 30d | 2015-01-03 | 2015-02-05 | PQ-CS-C-752, P-MEP-FF-3213 SS+5d | 25d | 0d |  | Material Submittals [60 h] |  |
| P-MEP-FF-3263 |  | Material review & Approval of Glazed Louvre Panels | 30d | 2015-01-14 | 2015-02-18 | P-MEP-FF-3253 SS+10d, P-MEP-FF-3253 FF+10d | 30d | 0d |  | Material Approval [40 h] |  |
| P-MEP-FF-3273 |  | P.O of Glazed Louvre Panels | 2d | 2015-02-19 | 2015-02-21 | P-MEP-FF-3263, SD-CS-L0-1292 | 30d | 0d |  | Purchase Order [20 h] |  |
| P-MEP-FF-3283 |  | Lead Time & Delivery of Glazed Louvre Panels | 120d | 2015-02-22 | 2015-06-21 | P-MEP-FF-3273 | 35d | 5d | * JWM - 7 Days per week with no holidays | Lead Time & Delivery [600 h] |  |
|  | 7 | **Perforated Aluminum Panels** |  | 2015-01-08 | 2015-06-26 |  |  |  |  |  |  |
| P-MEP-FF-3293 |  | Material Submittals of Perforated Aluminum | 30d | 2015-01-08 | 2015-02-12 | PQ-CS-C-752, P-MEP-FF-3253 SS+5d | 25d | 0d |  | Material Submittals [60 h] |  |
| P-MEP-FF-3303 |  | Material review & Approval of Perforated Aluminum Panels | 30d | 2015-01-20 | 2015-02-24 | P-MEP-FF-3293 SS+10d, P-MEP-FF-3293 FF+10d | 25d | 0d |  | Material Approval [40 h] |  |
| P-MEP-FF-3313 |  | P.O of Perforated Aluminum Panels | 2d | 2015-02-25 | 2015-02-26 | P-MEP-FF-3303, SD-CS-L0-1292 | 25d | 0d |  | Purchase Order [20 h] |  |
| P-MEP-FF-3323 |  | Lead Time & Delivery of Perforated Aluminum Panels | 120d | 2015-02-27 | 2015-06-26 | P-MEP-FF-3313 | 30d | 0d | * JWM - 7 Days per week with no holidays | Lead Time & Delivery [600 h] |  |
|  | 2 | **MEP** |  | 2014-10-14 | 2016-01-04 |  |  |  |  |  |  |
|  | 1 | **Electrical** |  | 2014-10-18 | 2016-01-04 |  |  |  |  |  |  |
|  | 13 | **Conduits & Boxes** |  | 2014-11-03 | 2014-12-01 |  |  |  |  |  |  |
| P-MEP-E-4613 |  | Material Submittals of Conduits & Boxes | 7d | 2014-11-03 | 2014-11-10 | PQ-CS-C-412 | 5d | 0d |  | Material Submittals [60 h] | 2,139.93 |
| P-MEP-E-4623 |  | Material review & Approval of Conduits & Boxes | 7d | 2014-11-15 | 2014-11-22 | P-MEP-E-4613 SS+10d, P-MEP-E-4613 FF+10d | 5d | 0d |  | Material Approval [40 h] | 2,139.93 |
| P-MEP-E-4633 |  | P.O of Conduits & Boxes | 2d | 2014-11-23 | 2014-11-24 | P-MEP-E-4623 | 5d | 0d |  | Purchase Order [20 h] |  |
| P-MEP-E-4643 |  | Lead Time & Delivery of Conduits & Boxes | 7d | 2014-11-25 | 2014-12-01 | P-MEP-E-4633 | 6d | 0d | * JWM - 7 Days per week with no holidays | Lead Time & Delivery [600 h] |  |

Notes:
- P-MEP-E-4613: Expenses: 1 2139.93
- P-MEP-E-4623: Expenses: 1 2139.93

| ID | WBS | Activity | Duration | Start | Finish | Predecessors | Total float | Free float | Calendar | Resources | Cost |
| --- | --- | --- | --- | --- | --- | --- | --- | --- | --- | --- | --- |
|  | 10 | **Grounding, Bonding & Lightning Protection** |  | 2014-10-18 | 2014-11-11 |  |  |  |  |  |  |
| P-MEP-E-4653 |  | Material Submittals of Grounding Bonding & Lightning Protection | 5d | 2014-10-18 | 2014-10-22 | PQ-CS-C-412 SS | 2d | 0d |  | Material Submittals [60 h] | 2,139.93 |
| P-MEP-E-4663 |  | Material review & Approval of Grounding Bonding & Lightning Protection | 10d | 2014-10-23 | 2014-11-03 | P-MEP-E-4653 | 2d | 0d |  | Material Approval [40 h] | 2,139.93 |
| P-MEP-E-4673 |  | P.O of Grounding Bonding & Lightning Protection | 1d | 2014-11-04 | 2014-11-04 | P-MEP-E-4663 | 2d | 0d |  | Purchase Order [20 h] |  |
| P-MEP-E-4683 |  | Lead Time & Delivery of Grounding Bonding & Lightning Protection | 7d | 2014-11-05 | 2014-11-11 | P-MEP-E-4673 | 2d | 0d | * JWM - 7 Days per week with no holidays | Lead Time & Delivery [600 h] |  |
|  | 11 | **Cable Tray / Ladder** |  | 2014-10-23 | 2015-03-22 |  |  |  |  |  |  |
| P-MEP-E-4693 |  | Material Submittals of Cable Tray & Ladder | 14d | 2014-10-23 | 2014-11-08 | PQ-CS-C-472, P-MEP-E-4653 | 132d | 0d |  | Material Submittals [60 h] | 2,139.93 |
| P-MEP-E-4703 |  | Material review & Approval of Cable Tray & Ladder | 14d | 2014-11-04 | 2014-11-19 | P-MEP-E-4693 SS+10d, P-MEP-E-4693 FF+10d | 132d | 0d |  | Material Approval [40 h] | 2,139.93 |
| P-MEP-E-4713 |  | P.O of Cable Tray & Ladder | 2d | 2014-11-20 | 2014-11-22 | P-MEP-E-4703 | 132d | 0d |  | Purchase Order [20 h] |  |
| P-MEP-E-4723 |  | Lead Time & Delivery of Cable Tray & Ladder | 120d | 2014-11-23 | 2015-03-22 | P-MEP-E-4713 | 156d | 9d | * JWM - 7 Days per week with no holidays | Lead Time & Delivery [600 h] |  |
|  | 12 | **Cabling & Wiring** |  | 2014-11-09 | 2015-04-07 |  |  |  |  |  |  |
| P-MEP-E-4733 |  | Material Submittals of Cabling & Wirring | 14d | 2014-11-09 | 2014-11-24 | PQ-CS-C-472, P-MEP-E-4693 | 153d | 0d |  | Material Submittals [60 h] | 2,139.93 |
| P-MEP-E-4743 |  | Material review & Approval of Cabling & Wirring | 14d | 2014-11-20 | 2014-12-06 | P-MEP-E-4733 SS+10d, P-MEP-E-4733 FF+10d | 153d | 0d |  | Material Approval [40 h] | 2,139.93 |
| P-MEP-E-4753 |  | P.O of Cabling & Wirring | 2d | 2014-12-07 | 2014-12-08 | P-MEP-E-4743 | 153d | 0d |  | Purchase Order [20 h] |  |
| P-MEP-E-4763 |  | Lead Time & Delivery of Cabling & Wirring | 120d | 2014-12-09 | 2015-04-07 | P-MEP-E-4753 | 181d | 14d | * JWM - 7 Days per week with no holidays | Lead Time & Delivery [600 h] |  |
|  | 18 | **Sockets & Switches** |  | 2014-11-25 | 2015-04-24 |  |  |  |  |  |  |
| P-MEP-E-4773 |  | Material Submittals of Socket & Switches | 14d | 2014-11-25 | 2014-12-10 | PQ-CS-C-472, P-MEP-E-4733 | 171d | 0d |  | Material Submittals [60 h] | 2,139.93 |
| P-MEP-E-4783 |  | Material review & Approval of Socket & Switches | 14d | 2014-12-07 | 2014-12-23 | P-MEP-E-4773 SS+10d, P-MEP-E-4773 FF+10d | 171d | 0d |  | Material Approval [40 h] | 2,139.93 |
| P-MEP-E-4793 |  | P.O of Socket & Switches | 2d | 2014-12-24 | 2014-12-25 | P-MEP-E-4783 | 171d | 0d |  | Purchase Order [20 h] |  |
| P-MEP-E-4803 |  | Lead Time & Delivery of Socket & Switches | 120d | 2014-12-26 | 2015-04-24 | P-MEP-E-4793 | 201d | 94d | * JWM - 7 Days per week with no holidays | Lead Time & Delivery [600 h] |  |
|  | 19 | **Internal Lighting Fixtures** |  | 2014-12-11 | 2015-07-10 |  |  |  |  |  |  |
| P-MEP-E-4813 |  | Material Submittals of Internal Lighting Fixtures | 14d | 2014-12-11 | 2014-12-28 | PQ-CS-C-472, P-MEP-E-4773 | 343d | 0d |  | Material Submittals [60 h] | 2,139.93 |
| P-MEP-E-4823 |  | Material review & Approval of Internal Lighting Fixtures | 14d | 2014-12-24 | 2015-01-08 | P-MEP-E-4813 SS+10d, P-MEP-E-4813 FF+10d | 343d | 0d |  | Material Approval [40 h] | 2,139.93 |
| P-MEP-E-4833 |  | P.O of Internal Lighting Fixtures | 2d | 2015-01-10 | 2015-01-11 | P-MEP-E-4823 | 343d | 0d |  | Purchase Order [20 h] |  |
| P-MEP-E-4843 |  | Lead Time & Delivery of Internal Lighting Fixtures | 180d | 2015-01-12 | 2015-07-10 | P-MEP-E-4833 | 409d | 229d | * JWM - 7 Days per week with no holidays | Lead Time & Delivery [600 h] |  |

Notes:
- P-MEP-E-4653: Expenses: 1 2139.93
- P-MEP-E-4663: Expenses: 1 2139.93
- P-MEP-E-4693: Expenses: 1 2139.93
- P-MEP-E-4703: Expenses: 1 2139.93
- P-MEP-E-4733: Expenses: 1 2139.93
- P-MEP-E-4743: Expenses: 1 2139.93
- P-MEP-E-4773: Expenses: 1 2139.93
- P-MEP-E-4783: Expenses: 1 2139.93
- P-MEP-E-4813: Expenses: 1 2139.93
- P-MEP-E-4823: Expenses: 1 2139.93

| ID | WBS | Activity | Duration | Start | Finish | Predecessors | Total float | Free float | Calendar | Resources | Cost |
| --- | --- | --- | --- | --- | --- | --- | --- | --- | --- | --- | --- |
|  | 20 | **Facade Ligting Fixtures** |  | 2014-11-11 | 2015-04-09 |  |  |  |  |  |  |
| P-MEP-E-4853 |  | Material Submittals of Facade Lighting Fixtures | 14d | 2014-11-11 | 2014-11-26 | PQ-CS-C-472, P-MEP-E-4613 | 90d | 0d |  | Material Submittals [60 h] | 2,139.93 |
| P-MEP-E-4863 |  | Material review & Approval of Facade Lighting Fixtures | 14d | 2014-11-23 | 2014-12-08 | P-MEP-E-4853 SS+10d, P-MEP-E-4853 FF+10d | 90d | 0d |  | Material Approval [40 h] | 2,139.93 |
| P-MEP-E-4873 |  | P.O of Facade Lighting Fixtures | 2d | 2014-12-09 | 2014-12-10 | P-MEP-E-4863 | 90d | 0d |  | Purchase Order [20 h] |  |
| P-MEP-E-4883 |  | Lead Time & Delivery of Facade Lighting Fixtures | 120d | 2014-12-11 | 2015-04-09 | P-MEP-E-4873 | 108d | 78d | * JWM - 7 Days per week with no holidays | Lead Time & Delivery [600 h] |  |
|  | 21 | **External Lighting fixtures** |  | 2014-12-29 | 2015-07-26 |  |  |  |  |  |  |
| P-MEP-E-4893 |  | Material Submittals of External Lighting Fixtures | 14d | 2014-12-29 | 2015-01-13 | PQ-CS-C-472, P-MEP-E-4813 | 538d | 0d |  | Material Submittals [60 h] | 2,139.93 |
| P-MEP-E-4903 |  | Material review & Approval of External Lighting Fixtures | 14d | 2015-01-10 | 2015-01-25 | P-MEP-E-4893 SS+10d, P-MEP-E-4893 FF+10d | 538d | 0d |  | Material Approval [40 h] | 2,139.93 |
| P-MEP-E-4913 |  | P.O of External Lighting Fixtures | 2d | 2015-01-26 | 2015-01-27 | P-MEP-E-4903 | 538d | 0d |  | Purchase Order [20 h] |  |
| P-MEP-E-4923 |  | Lead Time & Delivery of External Lighting Fixtures | 180d | 2015-01-28 | 2015-07-26 | P-MEP-E-4913 | 645d | 521d | * JWM - 7 Days per week with no holidays | Lead Time & Delivery [600 h] |  |
|  | 1 | **HV switchgear panels** |  | 2014-11-11 | 2015-07-18 |  |  |  |  |  |  |
| P-MEP-E-4933 |  | Material Submittals of HV Switchgear Panels | 14d | 2014-11-11 | 2014-11-26 | PQ-CS-C-472, P-MEP-E-4613 | 144d | 0d |  | Material Submittals [60 h] | 2,139.93 |
| P-MEP-E-4943 |  | Material review & Approval of HV Switchgear Panels | 14d | 2014-11-23 | 2014-12-08 | P-MEP-E-4933 SS+10d, P-MEP-E-4933 FF+10d | 144d | 0d |  | Material Approval [40 h] | 2,139.93 |
| P-MEP-E-4953 |  | P.O of HV Switchgear Panels | 2d | 2015-02-07 | 2015-02-08 | P-MEP-E-4943, G-A-M-KE-003 | 210d | 0d |  | Purchase Order [20 h] |  |
| P-MEP-E-4963 |  | Lead Time & Delivery of HV Switchgear Panels | 160d | 2015-02-09 | 2015-07-18 | P-MEP-E-4953 | 252d | 78d | * JWM - 7 Days per week with no holidays | Lead Time & Delivery [600 h] |  |
|  | 2 | **HV cables** |  | 2014-11-11 | 2015-04-09 |  |  |  |  |  |  |
| P-MEP-E-4973 |  | Material Submittals of HV Cables | 14d | 2014-11-11 | 2014-11-26 | PQ-CS-C-472, P-MEP-E-4613 | 92d | 0d |  | Material Submittals [60 h] | 2,139.93 |
| P-MEP-E-4983 |  | Material review & Approval of HV Cables | 14d | 2014-11-23 | 2014-12-08 | P-MEP-E-4973 SS+10d, P-MEP-E-4973 FF+10d | 181d | 0d |  | Material Approval [40 h] | 2,139.93 |
| P-MEP-E-4993 |  | P.O of HV Cables | 2d | 2014-12-09 | 2014-12-10 | P-MEP-E-4983 | 181d | 0d |  | Purchase Order [20 h] |  |
| P-MEP-E-5003 |  | Lead Time & Delivery of HV Cables | 120d | 2014-12-11 | 2015-04-09 | P-MEP-E-4993 | 214d | 145d | * JWM - 7 Days per week with no holidays | Lead Time & Delivery [600 h] |  |
|  | 3 | **Bus duct & Tap off points** |  | 2014-11-27 | 2015-04-27 |  |  |  |  |  |  |
| P-MEP-E-5013 |  | Material Submittals of Bus Duct & Tap off Points | 14d | 2014-11-27 | 2014-12-13 | PQ-CS-C-472, P-MEP-E-4973 | 92d | 0d |  | Material Submittals [60 h] | 2,139.93 |
| P-MEP-E-5023 |  | Material review & Approval of Bus Duct & Tap off Points | 14d | 2014-12-09 | 2014-12-25 | P-MEP-E-5013 SS+10d, P-MEP-E-5013 FF+10d | 147d | 0d |  | Material Approval [40 h] | 2,139.93 |
| P-MEP-E-5033 |  | P.O of Bus Duct & Tap off Points | 2d | 2014-12-27 | 2014-12-28 | P-MEP-E-5023 | 147d | 0d |  | Purchase Order [20 h] |  |
| P-MEP-E-5043 |  | Lead Time & Delivery of Bus Duct & Tap off Points | 120d | 2014-12-29 | 2015-04-27 | P-MEP-E-5033 | 173d | 156d | * JWM - 7 Days per week with no holidays | Lead Time & Delivery [600 h] |  |

Notes:
- P-MEP-E-4853: Expenses: 1 2139.93
- P-MEP-E-4863: Expenses: 1 2139.93
- P-MEP-E-4893: Expenses: 1 2139.93
- P-MEP-E-4903: Expenses: 1 2139.93
- P-MEP-E-4933: Expenses: 1 2139.93
- P-MEP-E-4943: Expenses: 1 2139.93
- P-MEP-E-4973: Expenses: 1 2139.93
- P-MEP-E-4983: Expenses: 1 2139.93
- P-MEP-E-5013: Expenses: 1 2139.93
- P-MEP-E-5023: Expenses: 1 2139.93

| ID | WBS | Activity | Duration | Start | Finish | Predecessors | Total float | Free float | Calendar | Resources | Cost |
| --- | --- | --- | --- | --- | --- | --- | --- | --- | --- | --- | --- |
|  | 4 | **Transformers** |  | 2014-11-11 | 2015-07-18 |  |  |  |  |  |  |
| P-MEP-E-5053 |  | Material Submittals of Transformers | 14d | 2014-11-11 | 2014-11-26 | PQ-CS-C-472, P-MEP-E-4613 | 144d | 0d |  | Material Submittals [60 h] | 2,139.93 |
| P-MEP-E-5063 |  | Material review & Approval of Transformers | 14d | 2014-11-23 | 2014-12-08 | P-MEP-E-5053 SS+10d, P-MEP-E-5053 FF+10d | 144d | 0d |  | Material Approval [40 h] | 2,139.93 |
| P-MEP-E-5073 |  | P.O of Transformers | 2d | 2015-02-07 | 2015-02-08 | P-MEP-E-5063, G-A-M-KE-003 | 210d | 0d |  | Purchase Order [20 h] |  |
| P-MEP-E-5083 |  | Lead Time & Delivery of Transformers | 160d | 2015-02-09 | 2015-07-18 | P-MEP-E-5073 | 252d | 45d | * JWM - 7 Days per week with no holidays | Lead Time & Delivery [600 h] |  |
|  | 5 | **MV Panels** |  | 2014-11-11 | 2015-07-18 |  |  |  |  |  |  |
| P-MEP-E-5093 |  | Material Submittals of MV Panels | 14d | 2014-11-11 | 2014-11-26 | PQ-CS-C-472, P-MEP-E-4613 | 144d | 0d |  | Material Submittals [60 h] | 2,139.93 |
| P-MEP-E-5103 |  | Material review & Approval of MV Panels | 14d | 2014-11-23 | 2014-12-08 | P-MEP-E-5093 SS+10d, P-MEP-E-5093 FF+10d | 144d | 0d |  | Material Approval [40 h] | 2,139.93 |
| P-MEP-E-5113 |  | P.O of MV Panels | 2d | 2015-02-07 | 2015-02-08 | P-MEP-E-5103, G-A-M-KE-003 | 146d | 0d |  | Purchase Order [20 h] |  |
| P-MEP-E-5123 |  | Lead Time & Delivery of MV Panels | 160d | 2015-02-09 | 2015-07-18 | P-MEP-E-5113 | 174d | 107d | * JWM - 7 Days per week with no holidays | Lead Time & Delivery [600 h] |  |
|  | 6 | **SMDB's - Sub main distribution board** |  | 2014-12-14 | 2015-07-12 |  |  |  |  |  |  |
| P-MEP-E-5133 |  | Material Submittals of Submain Distribution Boards | 14d | 2014-12-14 | 2014-12-30 | PQ-CS-C-472, P-MEP-E-5013 | 92d | 0d |  | Material Submittals [60 h] | 2,139.93 |
| P-MEP-E-5143 |  | Material review & Approval of Submain Distribution Boards | 14d | 2014-12-27 | 2015-01-11 | P-MEP-E-5133 SS+10d, P-MEP-E-5133 FF+10d | 112d | 0d |  | Material Approval [40 h] | 2,139.93 |
| P-MEP-E-5153 |  | P.O of Submain Distribution Boards | 2d | 2015-01-12 | 2015-01-13 | P-MEP-E-5143 | 112d | 0d |  | Purchase Order [20 h] |  |
| P-MEP-E-5163 |  | Lead Time & Delivery of Submain Distribution Boards | 180d | 2015-01-14 | 2015-07-12 | P-MEP-E-5153 | 132d | 16d | * JWM - 7 Days per week with no holidays | Lead Time & Delivery [600 h] |  |
|  | 7 | **DB's - Distribution Boards** |  | 2014-12-31 | 2015-07-28 |  |  |  |  |  |  |
| P-MEP-E-5173 |  | Material Submittals of Distribution Boards | 14d | 2014-12-31 | 2015-01-15 | PQ-CS-C-472, P-MEP-E-5133 | 92d | 0d |  | Material Submittals [60 h] | 2,139.93 |
| P-MEP-E-5183 |  | Material review & Approval of Distribution Boards | 14d | 2015-01-12 | 2015-01-27 | P-MEP-E-5173 SS+10d, P-MEP-E-5173 FF+10d | 98d | 0d |  | Material Approval [40 h] | 2,139.93 |
| P-MEP-E-5193 |  | P.O of Distribution Boards | 2d | 2015-01-28 | 2015-01-29 | P-MEP-E-5183 | 98d | 0d |  | Purchase Order [20 h] |  |
| P-MEP-E-5203 |  | Lead Time & Delivery of Distribution Boards | 180d | 2015-01-30 | 2015-07-28 | P-MEP-E-5193 | 116d | 0d | * JWM - 7 Days per week with no holidays | Lead Time & Delivery [600 h] |  |
|  | 8 | **MCC Panels** |  | 2015-01-17 | 2015-08-15 |  |  |  |  |  |  |
| P-MEP-E-5213 |  | Material Submittals of MCC Panels | 14d | 2015-01-17 | 2015-02-01 | PQ-CS-C-472, P-MEP-E-5173 | 92d | 0d |  | Material Submittals [60 h] | 2,139.93 |
| P-MEP-E-5223 |  | Material review & Approval of MCC Panels | 14d | 2015-01-28 | 2015-02-14 | P-MEP-E-5213 SS+10d, P-MEP-E-5213 FF+10d | 196d | 0d |  | Material Approval [40 h] | 2,139.93 |
| P-MEP-E-5233 |  | P.O of MCC Panels | 2d | 2015-02-15 | 2015-02-16 | P-MEP-E-5223 | 196d | 0d |  | Purchase Order [20 h] |  |
| P-MEP-E-5243 |  | Lead Time & Delivery of MCC Panels | 180d | 2015-02-17 | 2015-08-15 | P-MEP-E-5233 | 234d | 139d | * JWM - 7 Days per week with no holidays | Lead Time & Delivery [600 h] |  |

Notes:
- P-MEP-E-5053: Expenses: 1 2139.93
- P-MEP-E-5063: Expenses: 1 2139.93
- P-MEP-E-5093: Expenses: 1 2139.93
- P-MEP-E-5103: Expenses: 1 2139.93
- P-MEP-E-5133: Expenses: 1 2139.93
- P-MEP-E-5143: Expenses: 1 2139.93
- P-MEP-E-5173: Expenses: 1 2139.93
- P-MEP-E-5183: Expenses: 1 2139.93
- P-MEP-E-5213: Expenses: 1 2139.93
- P-MEP-E-5223: Expenses: 1 2139.93

| ID | WBS | Activity | Duration | Start | Finish | Predecessors | Total float | Free float | Calendar | Resources | Cost |
| --- | --- | --- | --- | --- | --- | --- | --- | --- | --- | --- | --- |
|  | 9 | **Control Panels** |  | 2015-02-02 | 2015-08-31 |  |  |  |  |  |  |
| P-MEP-E-5253 |  | Material Submittals of Control Panels | 14d | 2015-02-02 | 2015-02-18 | PQ-CS-C-472, P-MEP-E-5213 | 92d | 0d |  | Material Submittals [60 h] | 2,139.93 |
| P-MEP-E-5263 |  | Material review & Approval of Control Panels | 14d | 2015-02-15 | 2015-03-02 | P-MEP-E-5253 SS+10d, P-MEP-E-5253 FF+10d | 271d | 0d |  | Material Approval [40 h] | 2,139.93 |
| P-MEP-E-5273 |  | P.O of Control Panels | 2d | 2015-03-03 | 2015-03-04 | P-MEP-E-5263 | 271d | 0d |  | Purchase Order [20 h] |  |
| P-MEP-E-5283 |  | Lead Time & Delivery of Control Panels | 180d | 2015-03-05 | 2015-08-31 | P-MEP-E-5273 | 323d | 186d | * JWM - 7 Days per week with no holidays | Lead Time & Delivery [600 h] |  |
|  | 14 | **Generator** |  | 2015-02-19 | 2015-09-17 |  |  |  |  |  |  |
| P-MEP-E-5293 |  | Material Submittals of Generator | 14d | 2015-02-19 | 2015-03-07 | PQ-CS-C-472, P-MEP-E-5253 | 92d | 0d |  | Material Submittals [60 h] | 2,139.93 |
| P-MEP-E-5303 |  | Material review & Approval of Generator | 14d | 2015-03-03 | 2015-03-18 | P-MEP-E-5293 SS+10d, P-MEP-E-5293 FF+10d | 204d | 0d |  | Material Approval [40 h] | 2,139.93 |
| P-MEP-E-5313 |  | P.O of Generator | 2d | 2015-03-19 | 2015-03-21 | P-MEP-E-5303 | 204d | 0d |  | Purchase Order [20 h] |  |
| P-MEP-E-5323 |  | Lead Time & Delivery of Generator | 180d | 2015-03-22 | 2015-09-17 | P-MEP-E-5313 | 244d | 75d | * JWM - 7 Days per week with no holidays | Lead Time & Delivery [600 h] |  |
|  | 15 | **Fuel Tank** |  | 2014-10-20 | 2016-01-04 |  |  |  |  |  |  |
| P-MEP-E-5333 |  | Material Submittals of Fuel Tank | 14d | 2014-10-20 | 2014-11-04 | PQ-CS-C-472 | 259d | 0d |  | Material Submittals [60 h] | 2,139.93 |
| P-MEP-E-5343 |  | Material review & Approval of Fuel Tank | 14d | 2014-11-01 | 2014-11-16 | P-MEP-E-5333 SS+10d, P-MEP-E-5333 FF+10d | 259d | 147d |  | Material Approval [40 h] | 2,139.93 |
| P-MEP-E-5353 |  | P.O of Fuel Tank | 2d | 2015-07-07 | 2015-07-08 | P-MEP-E-5343, G-A-M-W-003 | 163d | 0d |  | Purchase Order [20 h] |  |
| P-MEP-E-5363 |  | Lead Time & Delivery of Fuel Tank | 180d | 2015-07-09 | 2016-01-04 | P-MEP-E-5353 | 197d | 26d | * JWM - 7 Days per week with no holidays | Lead Time & Delivery [600 h] |  |
|  | 16 | **Fuel Pump** |  | 2015-03-08 | 2016-01-04 |  |  |  |  |  |  |
| P-MEP-E-5373 |  | Material Submittals of Fuel Pump | 14d | 2015-03-08 | 2015-03-23 | PQ-CS-C-472, P-MEP-E-5293 | 92d | 0d |  | Material Submittals [60 h] | 2,139.93 |
| P-MEP-E-5383 |  | Material review & Approval of Fuel Pump | 14d | 2015-03-19 | 2015-04-04 | P-MEP-E-5373 SS+10d, P-MEP-E-5373 FF+10d | 142d | 30d |  | Material Approval [40 h] | 2,139.93 |
| P-MEP-E-5393 |  | P.O of Fuel Pump | 2d | 2015-07-07 | 2015-07-08 | P-MEP-E-5383, G-A-M-W-003 | 186d | 0d |  | Purchase Order [20 h] |  |
| P-MEP-E-5403 |  | Lead Time & Delivery of Fuel Pump | 180d | 2015-07-09 | 2016-01-04 | P-MEP-E-5393 | 226d | 56d | * JWM - 7 Days per week with no holidays | Lead Time & Delivery [600 h] |  |
|  | 17 | **Central Battery** |  | 2015-03-24 | 2015-10-19 |  |  |  |  |  |  |
| P-MEP-E-5413 |  | Material Submittals of Central Battery | 14d | 2015-03-24 | 2015-04-08 | PQ-CS-C-472, P-MEP-E-5373 | 92d | 0d |  | Material Submittals [60 h] | 2,139.93 |
| P-MEP-E-5423 |  | Material review & Approval of Central Battery | 14d | 2015-04-05 | 2015-04-20 | P-MEP-E-5413 SS+10d, P-MEP-E-5413 FF+10d | 92d | 0d |  | Material Approval [40 h] | 2,139.93 |
| P-MEP-E-5433 |  | P.O of Central Battery | 2d | 2015-04-21 | 2015-04-22 | P-MEP-E-5423 | 92d | 0d |  | Purchase Order [20 h] |  |
| P-MEP-E-5443 |  | Lead Time & Delivery of Central Battery | 180d | 2015-04-23 | 2015-10-19 | P-MEP-E-5433 | 110d | 43d | * JWM - 7 Days per week with no holidays | Lead Time & Delivery [600 h] |  |

Notes:
- P-MEP-E-5253: Expenses: 1 2139.93
- P-MEP-E-5263: Expenses: 1 2139.93
- P-MEP-E-5293: Expenses: 1 2139.93
- P-MEP-E-5303: Expenses: 1 2139.93
- P-MEP-E-5333: Expenses: 1 2139.93
- P-MEP-E-5343: Expenses: 1 2139.93
- P-MEP-E-5373: Expenses: 1 2139.93
- P-MEP-E-5383: Expenses: 1 2139.93
- P-MEP-E-5413: Expenses: 1 2139.93
- P-MEP-E-5423: Expenses: 1 2139.93

| ID | WBS | Activity | Duration | Start | Finish | Predecessors | Total float | Free float | Calendar | Resources | Cost |
| --- | --- | --- | --- | --- | --- | --- | --- | --- | --- | --- | --- |
|  | 22 | **UPS** |  | 2015-04-09 | 2015-10-16 |  |  |  |  |  |  |
| P-MEP-E-5453 |  | Material Submittals of UPS | 14d | 2015-04-09 | 2015-04-25 | PQ-CS-C-472, P-MEP-E-5413 | 95d | 0d |  | Material Submittals [60 h] | 2,139.93 |
| P-MEP-E-5463 |  | Material review & Approval of UPS | 14d | 2015-04-21 | 2015-05-06 | P-MEP-E-5453 SS+10d, P-MEP-E-5453 FF+10d | 95d | 0d |  | Material Approval [40 h] | 2,139.93 |
| P-MEP-E-5473 |  | P.O of UPS | 2d | 2015-05-07 | 2015-05-09 | P-MEP-E-5463 | 95d | 0d |  | Purchase Order [20 h] |  |
| P-MEP-E-5483 |  | Lead Time & Delivery of UPS | 160d | 2015-05-10 | 2015-10-16 | P-MEP-E-5473 | 113d | 46d | * JWM - 7 Days per week with no holidays | Lead Time & Delivery [600 h] |  |
|  | 23 | **Aircraft Warning Lights** |  | 2015-04-26 | 2015-11-01 |  |  |  |  |  |  |
| P-MEP-E-5493 |  | Material Submittals of Aircraft Warning Lights | 14d | 2015-04-26 | 2015-05-11 | P-MEP-E-5453 | 383d | 0d |  | Material Submittals [60 h] | 2,139.93 |
| P-MEP-E-5503 |  | Material review & Approval of Aircraft Warning Lights | 14d | 2015-05-07 | 2015-05-23 | P-MEP-E-5493 SS+10d, P-MEP-E-5493 FF+10d | 383d | 0d |  | Material Approval [40 h] | 2,139.93 |
| P-MEP-E-5513 |  | P.O of Aircraft Warning Lights | 2d | 2015-05-24 | 2015-05-25 | P-MEP-E-5503, G-A-M-CA-003 | 383d | 0d |  | Purchase Order [20 h] |  |
| P-MEP-E-5523 |  | Lead Time & Delivery of Aircraft Warning Lights | 160d | 2015-05-26 | 2015-11-01 | P-MEP-E-5513 | 458d | 195d | * JWM - 7 Days per week with no holidays | Lead Time & Delivery [600 h] |  |
|  | 2 | **HVAC** |  | 2014-11-18 | 2015-09-29 |  |  |  |  |  |  |
|  | 12 | **Ductwork** |  | 2014-11-18 | 2015-01-31 |  |  |  |  |  |  |
| P-MEP-AC-3693 |  | Material Submittals of Ductwork | 14d | 2014-11-18 | 2014-12-03 | PQ-CS-C-452 | 91d | 0d |  | Material Submittals [60 h] | 2,733.65 |
| P-MEP-AC-3703 |  | Material review & Approval of Ductwork | 14d | 2014-11-30 | 2014-12-15 | P-MEP-AC-3693 SS+10d, P-MEP-AC-3693 FF+10d | 125d | 0d |  | Material Approval [40 h] | 2,733.65 |
| P-MEP-AC-3713 |  | P.O of Ductwork | 2d | 2014-12-16 | 2014-12-17 | P-MEP-AC-3703 | 125d | 0d |  | Purchase Order [20 h] |  |
| P-MEP-AC-3723 |  | Start Delivery of Ductwork | 45d | 2014-12-18 | 2015-01-31 | P-MEP-AC-3713 | 149d | 24d | * JWM - 7 Days per week with no holidays |  |  |
|  | 13 | **Ductwork Insullation** |  | 2014-12-04 | 2015-05-04 |  |  |  |  |  |  |
| P-MEP-AC-3733 |  | Material Submittals of Ductwork Insullation | 14d | 2014-12-04 | 2014-12-21 | PQ-CS-C-452, P-MEP-AC-3693 | 91d | 0d |  | Material Submittals [60 h] | 2,733.65 |
| P-MEP-AC-3743 |  | Material review & Approval of Ductwork Insullation | 14d | 2014-12-16 | 2015-01-01 | P-MEP-AC-3733 SS+10d, P-MEP-AC-3733 FF+10d | 218d | 0d |  | Material Approval [40 h] | 2,733.65 |
| P-MEP-AC-3753 |  | P.O of Ductwork Insullation | 2d | 2015-01-03 | 2015-01-04 | P-MEP-AC-3743 | 218d | 0d |  | Purchase Order [20 h] |  |
| P-MEP-AC-3763 |  | Lead Time & Delivery of Ductwork Insullation | 120d | 2015-01-05 | 2015-05-04 | P-MEP-AC-3753 | 259d | 106d | * JWM - 7 Days per week with no holidays | Lead Time & Delivery [600 h] |  |
|  | 19 | **Chilled Water pipes** |  | 2014-12-22 | 2015-04-20 |  |  |  |  |  |  |
| P-MEP-AC-3773 |  | Material Submittals of Chilled Water Pipes | 14d | 2014-12-22 | 2015-01-06 | PQ-CS-C-452, P-MEP-AC-3733 | 91d | 0d |  | Material Submittals [60 h] | 1,457.95 |
| P-MEP-AC-3783 |  | Material review & Approval of Chilled Water Pipes | 14d | 2015-01-03 | 2015-01-18 | P-MEP-AC-3773 SS+10d, P-MEP-AC-3773 FF+10d | 121d | 0d |  | Material Approval [40 h] | 1,457.95 |
| P-MEP-AC-3793 |  | P.O of Chilled Water Pipes | 2d | 2015-01-19 | 2015-01-20 | P-MEP-AC-3783 | 121d | 0d |  | Purchase Order [20 h] |  |
| P-MEP-AC-3803 |  | Lead Time & Delivery of Chilled Water Pipes | 90d | 2015-01-21 | 2015-04-20 | P-MEP-AC-3793 | 142d | 0d | * JWM - 7 Days per week with no holidays | Lead Time & Delivery [600 h] |  |

Notes:
- P-MEP-E-5453: Expenses: 1 2139.93
- P-MEP-E-5463: Expenses: 1 2139.93
- P-MEP-E-5493: Expenses: 1 2139.93
- P-MEP-E-5503: Expenses: 1 2139.93
- P-MEP-AC-3693: Expenses: 1 2733.65
- P-MEP-AC-3703: Expenses: 1 2733.65
- P-MEP-AC-3733: Expenses: 1 2733.65
- P-MEP-AC-3743: Expenses: 1 2733.65
- P-MEP-AC-3773: Expenses: 1 1457.95
- P-MEP-AC-3783: Expenses: 1 1457.95

| ID | WBS | Activity | Duration | Start | Finish | Predecessors | Total float | Free float | Calendar | Resources | Cost |
| --- | --- | --- | --- | --- | --- | --- | --- | --- | --- | --- | --- |
|  | 20 | **Chilled Water pipe insulation** |  | 2015-01-07 | 2015-06-05 |  |  |  |  |  |  |
| P-MEP-AC-3813 |  | Material Submittals of Chilled Water Pipes Insulation | 14d | 2015-01-07 | 2015-01-22 | PQ-CS-C-452, P-MEP-AC-3773 | 91d | 0d |  | Material Submittals [60 h] |  |
| P-MEP-AC-3823 |  | Material review & Approval of Chilled Water Pipes Insulation | 14d | 2015-01-19 | 2015-02-03 | P-MEP-AC-3813 SS+10d, P-MEP-AC-3813 FF+10d | 136d | 0d |  | Material Approval [40 h] |  |
| P-MEP-AC-3833 |  | P.O of Chilled Water Pipes Insulation | 2d | 2015-02-04 | 2015-02-05 | P-MEP-AC-3823 | 136d | 0d |  | Purchase Order [20 h] |  |
| P-MEP-AC-3843 |  | Lead Time & Delivery of Chilled Water Pipes Insulation | 120d | 2015-02-06 | 2015-06-05 | P-MEP-AC-3833 | 163d | 0d | * JWM - 7 Days per week with no holidays | Lead Time & Delivery [600 h] |  |
|  | 21 | **Chilled Water valves** |  | 2015-01-24 | 2015-06-23 |  |  |  |  |  |  |
| P-MEP-AC-3853 |  | Material Submittals of Chilled Water Pipes Valves | 14d | 2015-01-24 | 2015-02-08 | PQ-CS-C-452, P-MEP-AC-3813 | 91d | 0d |  | Material Submittals [60 h] | 1,457.95 |
| P-MEP-AC-3863 |  | Material review & Approval of Chilled Water Pipes Valves | 14d | 2015-02-04 | 2015-02-21 | P-MEP-AC-3853 SS+10d, P-MEP-AC-3853 FF+10d | 143d | 0d |  | Material Approval [40 h] | 1,457.95 |
| P-MEP-AC-3873 |  | P.O of Chilled Water Pipes Valves | 2d | 2015-02-22 | 2015-02-23 | P-MEP-AC-3863 | 143d | 0d |  | Purchase Order [20 h] |  |
| P-MEP-AC-3883 |  | Lead Time & Delivery of Chilled Water Pipes Valves | 120d | 2015-02-24 | 2015-06-23 | P-MEP-AC-3873 | 169d | 59d | * JWM - 7 Days per week with no holidays | Lead Time & Delivery [600 h] |  |
|  | 22 | **Chilled Water Pumps** |  | 2015-01-24 | 2015-09-29 |  |  |  |  |  |  |
| P-MEP-AC-3893 |  | Material Submittals of Chilled Water Pumps | 14d | 2015-01-24 | 2015-02-08 | PQ-CS-C-452, P-MEP-AC-3853 SS | 91d | 0d |  | Material Submittals [60 h] | 1,457.95 |
| P-MEP-AC-3903 |  | Material review & Approval of Chilled Water Pumps | 14d | 2015-02-04 | 2015-02-21 | P-MEP-AC-3893 SS+10d, P-MEP-AC-3893 FF+10d | 91d | 0d |  | Material Approval [40 h] | 1,457.95 |
| P-MEP-AC-3913 |  | P.O of Chilled Water Pumps | 2d | 2015-04-21 | 2015-04-22 | P-MEP-AC-3903, G-A-M-QC-003 | 145d | 0d |  | Purchase Order [20 h] |  |
| P-MEP-AC-3923 |  | Lead Time & Delivery of Chilled Water Pumps | 160d | 2015-04-23 | 2015-09-29 | P-MEP-AC-3913 | 175d | 0d | * JWM - 7 Days per week with no holidays | Lead Time & Delivery [600 h] |  |
|  | 23 | **Heat Exchanger** |  | 2015-01-24 | 2015-09-29 |  |  |  |  |  |  |
| P-MEP-AC-3933 |  | Material Submittals of Heat Exchanger | 14d | 2015-01-24 | 2015-02-08 | PQ-CS-C-452, P-MEP-AC-3893 SS | 91d | 0d |  | Material Submittals [60 h] |  |
| P-MEP-AC-3943 |  | Material review & Approval of Heat Exchanger | 14d | 2015-02-04 | 2015-02-21 | P-MEP-AC-3933 SS+10d, P-MEP-AC-3933 FF+10d | 91d | 0d |  | Material Approval [40 h] |  |
| P-MEP-AC-3953 |  | P.O of Heat Exchanger | 2d | 2015-04-21 | 2015-04-22 | P-MEP-AC-3943, G-A-M-QC-003 | 194d | 0d |  | Purchase Order [20 h] |  |
| P-MEP-AC-3963 |  | Lead Time & Delivery of Heat Exchanger | 160d | 2015-04-23 | 2015-09-29 | P-MEP-AC-3953 | 232d | 0d | * JWM - 7 Days per week with no holidays | Lead Time & Delivery [600 h] |  |
|  | 16 | **Duct Silencers and Attenuators** |  | 2015-02-09 | 2015-08-18 |  |  |  |  |  |  |
| P-MEP-AC-3973 |  | Material Submittals of Duct Silencer | 14d | 2015-02-09 | 2015-02-25 | PQ-CS-C-452, P-MEP-AC-3933 | 129d | 0d |  | Material Submittals [60 h] |  |
| P-MEP-AC-3983 |  | Material review & Approval of Duct Silencer & Attenuators | 14d | 2015-02-22 | 2015-03-09 | P-MEP-AC-3973 SS+10d, P-MEP-AC-3973 FF+10d | 129d | 0d |  | Material Approval [40 h] |  |
| P-MEP-AC-3993 |  | P.O of Duct Silencer & Attenuators | 2d | 2015-03-10 | 2015-03-11 | P-MEP-AC-3983 | 129d | 0d |  | Purchase Order [20 h] |  |
| P-MEP-AC-4003 |  | Lead Time & Delivery of Duct Silencer & Attenuators | 160d | 2015-03-12 | 2015-08-18 | P-MEP-AC-3993 | 153d | 0d | * JWM - 7 Days per week with no holidays | Lead Time & Delivery [600 h] |  |

Notes:
- P-MEP-AC-3853: Expenses: 1 1457.95
- P-MEP-AC-3863: Expenses: 1 1457.95
- P-MEP-AC-3893: Expenses: 1 1457.95
- P-MEP-AC-3903: Expenses: 1 1457.95

| ID | WBS | Activity | Duration | Start | Finish | Predecessors | Total float | Free float | Calendar | Resources |
| --- | --- | --- | --- | --- | --- | --- | --- | --- | --- | --- |
|  | 15 | **Dampers** |  | 2014-11-18 | 2015-02-25 |  |  |  |  |  |
| P-MEP-AC-4013 |  | Material Submittals of Dampers | 14d | 2014-11-18 | 2014-12-03 | PQ-CS-C-452 | 119d | 0d |  | Material Submittals [60 h] |
| P-MEP-AC-4023 |  | Material review & Approval of Dampers | 14d | 2014-11-30 | 2014-12-15 | P-MEP-AC-4013 SS+10d, P-MEP-AC-4013 FF+10d | 129d | 0d |  | Material Approval [40 h] |
| P-MEP-AC-4033 |  | P.O of Dampers | 2d | 2014-12-16 | 2014-12-17 | P-MEP-AC-4023 | 129d | 0d |  | Purchase Order [20 h] |
| P-MEP-AC-4043 |  | Lead Time & Delivery of Dampers | 70d | 2014-12-18 | 2015-02-25 | P-MEP-AC-4033 | 153d | 26d | * JWM - 7 Days per week with no holidays | Lead Time & Delivery [600 h] |
|  | 17 | **Isolators** |  | 2014-12-04 | 2015-05-04 |  |  |  |  |  |
| P-MEP-AC-4053 |  | Material Submittals of Isolators | 14d | 2014-12-04 | 2014-12-21 | PQ-CS-C-452, P-MEP-AC-4013 | 119d | 0d |  | Material Submittals [60 h] |
| P-MEP-AC-4063 |  | Material review & Approval of Isolators | 14d | 2014-12-16 | 2015-01-01 | P-MEP-AC-4053 SS+10d, P-MEP-AC-4053 FF+10d | 313d | 0d |  | Material Approval [40 h] |
| P-MEP-AC-4073 |  | P.O of Isolators | 2d | 2015-01-03 | 2015-01-04 | P-MEP-AC-4063 | 313d | 0d |  | Purchase Order [20 h] |
| P-MEP-AC-4083 |  | Lead Time & Delivery of Isolators | 120d | 2015-01-05 | 2015-05-04 | P-MEP-AC-4073 | 373d | 231d | * JWM - 7 Days per week with no holidays | Lead Time & Delivery [600 h] |
|  | 14 | **Grilles, Diffusers and Louvers** |  | 2014-12-22 | 2015-05-20 |  |  |  |  |  |
| P-MEP-AC-4093 |  | Material Submittals of Grilles, Diffusers & Louvres | 14d | 2014-12-22 | 2015-01-06 | PQ-CS-C-452, P-MEP-AC-4053 | 119d | 0d |  | Material Submittals [60 h] |
| P-MEP-AC-4103 |  | Material review & Approval of Grilles, Diffusers & Louvres | 14d | 2015-01-03 | 2015-01-18 | P-MEP-AC-4093 SS+10d, P-MEP-AC-4093 FF+10d | 449d | 0d |  | Material Approval [40 h] |
| P-MEP-AC-4113 |  | P.O of Grilles, Diffusers & Louvres | 2d | 2015-01-19 | 2015-01-20 | P-MEP-AC-4103 | 449d | 0d |  | Purchase Order [20 h] |
| P-MEP-AC-4123 |  | Lead Time & Delivery of Grilles, Diffusers & Louvres | 120d | 2015-01-21 | 2015-05-20 | P-MEP-AC-4113 | 537d | 280d | * JWM - 7 Days per week with no holidays | Lead Time & Delivery [600 h] |
|  | 1 | **AHU's - Air Handling Units** |  | 2014-12-22 | 2015-08-20 |  |  |  |  |  |
| P-MEP-AC-4133 |  | Material Submittals of AHU's - Air Handling Units | 14d | 2014-12-22 | 2015-01-06 | PQ-CS-C-452, P-MEP-AC-4093 SS | 119d | 0d |  | Material Submittals [60 h] |
| P-MEP-AC-4143 |  | Material review & Approval of AHU's - Air Handling Units | 14d | 2015-01-03 | 2015-01-18 | P-MEP-AC-4133 SS+10d, P-MEP-AC-4133 FF+10d | 119d | 28d |  | Material Approval [40 h] |
| P-MEP-AC-4153 |  | P.O of AHU's - Air Handling Units | 2d | 2015-04-21 | 2015-04-22 | P-MEP-AC-4143, G-A-M-QC-003 | 241d | 0d |  | Purchase Order [20 h] |
| P-MEP-AC-4163 |  | Lead Time & Delivery of AHU's - Air Handling Units | 120d | 2015-04-23 | 2015-08-20 | P-MEP-AC-4153 | 289d | 109d | * JWM - 7 Days per week with no holidays | Lead Time & Delivery [600 h] |
|  | 2 | **FCU's - Fancoil Units** |  | 2014-12-22 | 2015-08-20 |  |  |  |  |  |
| P-MEP-AC-4173 |  | Material Submittals of FCU's - Fancoil Units | 14d | 2014-12-22 | 2015-01-06 | PQ-CS-C-452, P-MEP-AC-4133 SS | 119d | 0d |  | Material Submittals [60 h] |
| P-MEP-AC-4183 |  | Material review & Approval of FCU's - Fancoil Units | 14d | 2015-01-03 | 2015-01-18 | P-MEP-AC-4173 SS+10d, P-MEP-AC-4173 FF+10d | 119d | 28d |  | Material Approval [40 h] |
| P-MEP-AC-4193 |  | P.O of FCU's - Fancoil Units | 2d | 2015-04-21 | 2015-04-22 | P-MEP-AC-4183, G-A-M-QC-003 | 93d | 0d |  | Purchase Order [20 h] |
| P-MEP-AC-4203 |  | Lead Time & Delivery of FCU's - Fancoil Units | 120d | 2015-04-23 | 2015-08-20 | P-MEP-AC-4193 | 111d | 1d | * JWM - 7 Days per week with no holidays | Lead Time & Delivery [600 h] |

| ID | WBS | Activity | Duration | Start | Finish | Predecessors | Total float | Free float | Calendar | Resources |
| --- | --- | --- | --- | --- | --- | --- | --- | --- | --- | --- |
|  | 3 | **DX Type Units - Split units** |  | 2014-11-18 | 2015-04-16 |  |  |  |  |  |
| P-MEP-AC-4213 |  | Material Submittals of DX Type Units - Split Units | 14d | 2014-11-18 | 2014-12-03 | PQ-CS-C-452 | 143d | 0d |  | Material Submittals [60 h] |
| P-MEP-AC-4223 |  | Material review & Approval of DX Type Units - Split Units | 14d | 2014-11-30 | 2014-12-15 | P-MEP-AC-4213 SS+10d, P-MEP-AC-4213 FF+10d | 347d | 0d |  | Material Approval [40 h] |
| P-MEP-AC-4233 |  | P.O of DX Type Units - Split Units | 2d | 2014-12-16 | 2014-12-17 | P-MEP-AC-4223 | 347d | 0d |  | Purchase Order [20 h] |
| P-MEP-AC-4243 |  | Lead Time & Delivery of DX Type Units - Split Units | 120d | 2014-12-18 | 2015-04-16 | P-MEP-AC-4233 | 415d | 235d | * JWM - 7 Days per week with no holidays | Lead Time & Delivery [600 h] |
|  | 4 | **Energy Recovery Units** |  | 2014-12-04 | 2015-05-04 |  |  |  |  |  |
| P-MEP-AC-4253 |  | Material Submittals of Energy Recovery Units | 14d | 2014-12-04 | 2014-12-21 | PQ-CS-C-452, P-MEP-AC-4213 | 143d | 0d |  | Material Submittals [60 h] |
| P-MEP-AC-4263 |  | Material review & Approval of Energy Recovery Units | 14d | 2014-12-16 | 2015-01-01 | P-MEP-AC-4253 SS+10d, P-MEP-AC-4253 FF+10d | 220d | 0d |  | Material Approval [40 h] |
| P-MEP-AC-4273 |  | P.O of Energy Recovery Units | 2d | 2015-01-03 | 2015-01-04 | P-MEP-AC-4263 | 220d | 0d |  | Purchase Order [20 h] |
| P-MEP-AC-4283 |  | Lead Time & Delivery of Energy Recovery Units | 120d | 2015-01-05 | 2015-05-04 | P-MEP-AC-4273 | 264d | 53d | * JWM - 7 Days per week with no holidays | Lead Time & Delivery [600 h] |
|  | 5 | **Air distribution fans** |  | 2014-12-22 | 2015-05-20 |  |  |  |  |  |
| P-MEP-AC-4293 |  | Material Submittals of Air Distribution Fans | 14d | 2014-12-22 | 2015-01-06 | PQ-CS-C-452, P-MEP-AC-4253 | 143d | 0d |  | Material Submittals [60 h] |
| P-MEP-AC-4303 |  | Material review & Approval of Air Distribution Fans | 14d | 2015-01-03 | 2015-01-18 | P-MEP-AC-4293 SS+10d, P-MEP-AC-4293 FF+10d | 232d | 0d |  | Material Approval [40 h] |
| P-MEP-AC-4313 |  | P.O of Air Distribution Fans | 2d | 2015-01-19 | 2015-01-20 | P-MEP-AC-4303 | 232d | 0d |  | Purchase Order [20 h] |
| P-MEP-AC-4323 |  | Lead Time & Delivery of Air Distribution Fans | 120d | 2015-01-21 | 2015-05-20 | P-MEP-AC-4313 | 278d | 68d | * JWM - 7 Days per week with no holidays | Lead Time & Delivery [600 h] |
|  | 7 | **Fresh Air Pressurization Fans** |  | 2015-01-07 | 2015-06-05 |  |  |  |  |  |
| P-MEP-AC-4333 |  | Material Submittals of Fresh Air Pressurization Fans | 14d | 2015-01-07 | 2015-01-22 | PQ-CS-C-452, P-MEP-AC-4293 | 143d | 0d |  | Material Submittals [60 h] |
| P-MEP-AC-4343 |  | Material review & Approval of Fresh Air Pressurization Fans | 14d | 2015-01-19 | 2015-02-03 | P-MEP-AC-4333 SS+10d, P-MEP-AC-4333 FF+10d | 243d | 0d |  | Material Approval [40 h] |
| P-MEP-AC-4353 |  | P.O of Fresh Air Pressurization Fans | 2d | 2015-02-04 | 2015-02-05 | P-MEP-AC-4343 | 243d | 0d |  | Purchase Order [20 h] |
| P-MEP-AC-4363 |  | Lead Time & Delivery of Fresh Air Pressurization Fans | 120d | 2015-02-06 | 2015-06-05 | P-MEP-AC-4353 | 291d | 81d | * JWM - 7 Days per week with no holidays | Lead Time & Delivery [600 h] |
|  | 6 | **Exhaust Air Fans** |  | 2015-01-24 | 2015-06-23 |  |  |  |  |  |
| P-MEP-AC-4373 |  | Material Submittals of Exhaust Air Fans | 14d | 2015-01-24 | 2015-02-08 | PQ-CS-C-452, P-MEP-AC-4333 | 143d | 0d |  | Material Submittals [60 h] |
| P-MEP-AC-4383 |  | Material review & Approval of Exhaust Air Fans | 14d | 2015-02-04 | 2015-02-21 | P-MEP-AC-4373 SS+10d, P-MEP-AC-4373 FF+10d | 143d | 0d |  | Material Approval [40 h] |
| P-MEP-AC-4393 |  | P.O of Exhaust Air Fans | 2d | 2015-02-22 | 2015-02-23 | P-MEP-AC-4383 | 143d | 0d |  | Purchase Order [20 h] |
| P-MEP-AC-4403 |  | Lead Time & Delivery of Exhaust Air Fans | 120d | 2015-02-24 | 2015-06-23 | P-MEP-AC-4393 | 169d | 59d | * JWM - 7 Days per week with no holidays | Lead Time & Delivery [600 h] |

| ID | WBS | Activity | Duration | Start | Finish | Predecessors | Total float | Free float | Calendar | Resources |
| --- | --- | --- | --- | --- | --- | --- | --- | --- | --- | --- |
|  | 8 | **Emergency Ventilation Fans** |  | 2015-02-09 | 2015-07-09 |  |  |  |  |  |
| P-MEP-AC-4413 |  | Material Submittals of Emergency Ventilation Fans | 14d | 2015-02-09 | 2015-02-25 | PQ-CS-C-452, P-MEP-AC-4373 | 151d | 0d |  | Material Submittals [60 h] |
| P-MEP-AC-4423 |  | Material review & Approval of Emergency Ventilation Fans | 14d | 2015-02-22 | 2015-03-09 | P-MEP-AC-4413 SS+10d, P-MEP-AC-4413 FF+10d | 151d | 0d |  | Material Approval [40 h] |
| P-MEP-AC-4433 |  | P.O of Emergency Ventilation Fans | 2d | 2015-03-10 | 2015-03-11 | P-MEP-AC-4423 | 151d | 0d |  | Purchase Order [20 h] |
| P-MEP-AC-4443 |  | Lead Time & Delivery of Emergency Ventilation Fans | 120d | 2015-03-12 | 2015-07-09 | P-MEP-AC-4433 | 179d | 67d | * JWM - 7 Days per week with no holidays | Lead Time & Delivery [600 h] |
|  | 9 | **Jet Fans** |  | 2015-02-26 | 2015-07-26 |  |  |  |  |  |
| P-MEP-AC-4453 |  | Material Submittals of Jet Fans | 14d | 2015-02-26 | 2015-03-14 | PQ-CS-C-452, P-MEP-AC-4413 | 188d | 0d |  | Material Submittals [60 h] |
| P-MEP-AC-4463 |  | Material review & Approval of Jet Fans | 14d | 2015-03-10 | 2015-03-25 | P-MEP-AC-4453 SS+10d, P-MEP-AC-4453 FF+10d | 263d | 0d |  | Material Approval [40 h] |
| P-MEP-AC-4473 |  | P.O of Jet Fans | 2d | 2015-03-26 | 2015-03-28 | P-MEP-AC-4463 | 263d | 0d |  | Purchase Order [20 h] |
| P-MEP-AC-4483 |  | Lead Time & Delivery of Jet Fans | 120d | 2015-03-29 | 2015-07-26 | P-MEP-AC-4473 | 314d | 134d | * JWM - 7 Days per week with no holidays | Lead Time & Delivery [600 h] |
|  | 10 | **Variable Air Volume boxes (VAVs)** |  | 2015-02-09 | 2015-07-09 |  |  |  |  |  |
| P-MEP-AC-4493 |  | Material Submittals of Variable Air Volume Boxes (VAV) | 14d | 2015-02-09 | 2015-02-25 | PQ-CS-C-452, P-MEP-AC-3853 | 129d | 0d |  | Material Submittals [60 h] |
| P-MEP-AC-4503 |  | Material review & Approval of Variable Air Volume Boxes (VAV) | 14d | 2015-02-22 | 2015-03-09 | P-MEP-AC-4493 SS+10d, P-MEP-AC-4493 FF+10d | 129d | 0d |  | Material Approval [40 h] |
| P-MEP-AC-4513 |  | P.O of Variable Air Volume Boxes (VAV) | 2d | 2015-03-10 | 2015-03-11 | P-MEP-AC-4503 | 129d | 0d |  | Purchase Order [20 h] |
| P-MEP-AC-4523 |  | Lead Time & Delivery of Variable Air Volume Boxes (VAV) | 120d | 2015-03-12 | 2015-07-09 | P-MEP-AC-4513 | 153d | 43d | * JWM - 7 Days per week with no holidays | Lead Time & Delivery [600 h] |
|  | 11 | **Constant Air Volume boxes (CAVs)** |  | 2015-02-26 | 2015-07-26 |  |  |  |  |  |
| P-MEP-AC-4533 |  | Material Submittals of Control Air Volume (CAV) | 14d | 2015-02-26 | 2015-03-14 | PQ-CS-C-452, P-MEP-AC-4493 | 137d | 0d |  | Material Submittals [60 h] |
| P-MEP-AC-4543 |  | Material review & Approval of Control Air Volume (CAV) | 14d | 2015-03-10 | 2015-03-25 | P-MEP-AC-4533 SS+10d, P-MEP-AC-4533 FF+10d | 137d | 0d |  | Material Approval [40 h] |
| P-MEP-AC-4553 |  | P.O of Control Air Volume (CAV) | 2d | 2015-03-26 | 2015-03-28 | P-MEP-AC-4543 | 137d | 0d |  | Purchase Order [20 h] |
| P-MEP-AC-4563 |  | Lead Time & Delivery of Control Air Volume (CAV) | 120d | 2015-03-29 | 2015-07-26 | P-MEP-AC-4553 | 162d | 50d | * JWM - 7 Days per week with no holidays | Lead Time & Delivery [600 h] |
|  | 18 | **Gas Detection System** |  | 2015-03-15 | 2015-08-11 |  |  |  |  |  |
| P-MEP-AC-4573 |  | Material Submittals of Gas Detection System | 14d | 2015-03-15 | 2015-03-30 | PQ-CS-C-452, P-MEP-AC-4453, P-MEP-AC-4533 | 188d | 0d |  | Material Submittals [60 h] |
| P-MEP-AC-4583 |  | Material review & Approval of Gas Detection System | 14d | 2015-03-26 | 2015-04-11 | P-MEP-AC-4573 SS+10d, P-MEP-AC-4573 FF+10d | 188d | 0d |  | Material Approval [40 h] |
| P-MEP-AC-4593 |  | P.O of Gas Detection System | 2d | 2015-04-12 | 2015-04-13 | P-MEP-AC-4583 | 188d | 0d |  | Purchase Order [20 h] |
| P-MEP-AC-4603 |  | Lead Time & Delivery of Gas Detection System | 120d | 2015-04-14 | 2015-08-11 | P-MEP-AC-4593 | 225d | 47d | * JWM - 7 Days per week with no holidays | Lead Time & Delivery [600 h] |

| ID | WBS | Activity | Duration | Start | Finish | Predecessors | Total float | Free float | Calendar | Resources | Cost |
| --- | --- | --- | --- | --- | --- | --- | --- | --- | --- | --- | --- |
|  | 4 | **Fire Fighting** |  | 2014-10-14 | 2015-11-05 |  |  |  |  |  |  |
|  | 1 | **Fire fighting Pipes (ERW)** |  | 2014-10-14 | 2015-03-12 |  |  |  |  |  |  |
| P-MEP-FF-2973 |  | Material Submittals of Fire Fighting Pipes (ERW) | 14d | 2014-10-14 | 2014-10-29 | PQ-CS-C-432 | 97d | 0d |  | Material Submittals [60 h] | 8,788.14 |
| P-MEP-FF-2983 |  | Material review & Approval of Fire Fighting Pipes (ERW) | 14d | 2014-10-26 | 2014-11-10 | P-MEP-FF-2973 SS+10d, P-MEP-FF-2973 FF+10d | 107d | 0d |  | Material Approval [40 h] | 8,788.14 |
| P-MEP-FF-2993 |  | P.O of Fire Fighting Pipes (ERW) | 2d | 2014-11-11 | 2014-11-12 | P-MEP-FF-2983 | 107d | 0d |  | Purchase Order [20 h] |  |
| P-MEP-FF-3003 |  | Lead Time & Delivery of Fire Fighting Pipes (ERW) | 120d | 2014-11-13 | 2015-03-12 | P-MEP-FF-2993 | 127d | 1d | * JWM - 7 Days per week with no holidays | Lead Time & Delivery [600 h] |  |
|  | 2 | **Sprinkler Heads** |  | 2014-10-30 | 2015-03-29 |  |  |  |  |  |  |
| P-MEP-FF-3013 |  | Material Submittals of Sprinkler Heads | 14d | 2014-10-30 | 2014-11-15 | PQ-CS-C-432, P-MEP-FF-2973 | 97d | 0d |  | Material Submittals [60 h] | 8,788.14 |
| P-MEP-FF-3023 |  | Material review & Approval of Sprinkler Heads | 14d | 2014-11-11 | 2014-11-26 | P-MEP-FF-3013 SS+10d, P-MEP-FF-3013 FF+10d | 308d | 0d |  | Material Approval [40 h] | 8,788.14 |
| P-MEP-FF-3033 |  | P.O of Sprinkler Heads | 2d | 2014-11-27 | 2014-11-29 | P-MEP-FF-3023 | 308d | 0d |  | Purchase Order [20 h] |  |
| P-MEP-FF-3043 |  | Lead Time & Delivery of Sprinkler Heads | 120d | 2014-11-30 | 2015-03-29 | P-MEP-FF-3033 | 367d | 230d | * JWM - 7 Days per week with no holidays | Lead Time & Delivery [600 h] |  |
|  | 3 | **Flow Meters** |  | 2014-11-16 | 2015-04-14 |  |  |  |  |  |  |
| P-MEP-FF-3373 |  | Material Submittals of Flow Meter | 14d | 2014-11-16 | 2014-12-01 | PQ-CS-C-432, P-MEP-FF-3013 | 97d | 0d |  | Material Submittals [60 h] | 8,788.14 |
| P-MEP-FF-3383 |  | Material review & Approval of Flow Meter | 14d | 2014-11-27 | 2014-12-13 | P-MEP-FF-3373 SS+10d, P-MEP-FF-3373 FF+10d | 354d | 0d |  | Material Approval [40 h] | 8,788.14 |
| P-MEP-FF-3393 |  | P.O of Flow Meter | 2d | 2014-12-14 | 2014-12-15 | P-MEP-FF-3383 | 354d | 0d |  | Purchase Order [20 h] |  |
| P-MEP-FF-3403 |  | Lead Time & Delivery of Flow Meter | 120d | 2014-12-16 | 2015-04-14 | P-MEP-FF-3393 | 423d | 263d | * JWM - 7 Days per week with no holidays | Lead Time & Delivery [600 h] |  |
|  | 4 | **Fire Valves & Accessories** |  | 2014-12-02 | 2015-05-01 |  |  |  |  |  |  |
| P-MEP-FF-3413 |  | Material Submittals of Fire Valves & Accessories | 14d | 2014-12-02 | 2014-12-17 | PQ-CS-C-432, P-MEP-FF-3373 | 97d | 0d |  | Material Submittals [60 h] | 8,788.14 |
| P-MEP-FF-3423 |  | Material review & Approval of Fire Valves & Accessories | 14d | 2014-12-14 | 2014-12-30 | P-MEP-FF-3413 SS+10d, P-MEP-FF-3413 FF+10d | 97d | 0d |  | Material Approval [40 h] | 8,788.14 |
| P-MEP-FF-3433 |  | P.O of Fire Valves & Accessories | 2d | 2014-12-31 | 2015-01-01 | P-MEP-FF-3423 | 97d | 0d |  | Purchase Order [20 h] |  |
| P-MEP-FF-3443 |  | Lead Time & Delivery of Fire Valves & Accessories | 120d | 2015-01-02 | 2015-05-01 | P-MEP-FF-3433 | 115d | 0d | * JWM - 7 Days per week with no holidays | Lead Time & Delivery [600 h] |  |
|  | 5 | **Fire Pumps** |  | 2014-12-20 | 2015-05-18 |  |  |  |  |  |  |
| P-MEP-FF-3453 |  | Material Submittals of Fire Pumps | 14d | 2014-12-20 | 2015-01-04 | PQ-CS-C-432, P-MEP-FF-3413 | 172d | 0d |  | Material Submittals [60 h] | 8,788.14 |
| P-MEP-FF-3463 |  | Material review & Approval of Fire Pumps | 14d | 2014-12-31 | 2015-01-15 | P-MEP-FF-3453 SS+10d, P-MEP-FF-3453 FF+10d | 295d | 0d |  | Material Approval [40 h] | 8,788.14 |
| P-MEP-FF-3473 |  | P.O of Fire Pumps | 2d | 2015-01-17 | 2015-01-18 | P-MEP-FF-3463 | 295d | 0d |  | Purchase Order [20 h] |  |
| P-MEP-FF-3483 |  | Lead Time & Delivery of Fire Pumps | 120d | 2015-01-19 | 2015-05-18 | P-MEP-FF-3473 | 352d | 131d | * JWM - 7 Days per week with no holidays | Lead Time & Delivery [600 h] |  |

Notes:
- P-MEP-FF-2973: Expenses: 1 8788.14
- P-MEP-FF-2983: Expenses: 1 8788.14
- P-MEP-FF-3013: Expenses: 1 8788.14
- P-MEP-FF-3023: Expenses: 1 8788.14
- P-MEP-FF-3373: Expenses: 1 8788.14
- P-MEP-FF-3383: Expenses: 1 8788.14
- P-MEP-FF-3413: Expenses: 1 8788.14
- P-MEP-FF-3423: Expenses: 1 8788.14
- P-MEP-FF-3453: Expenses: 1 8788.14
- P-MEP-FF-3463: Expenses: 1 8788.14

| ID | WBS | Activity | Duration | Start | Finish | Predecessors | Total float | Free float | Calendar | Resources | Cost |
| --- | --- | --- | --- | --- | --- | --- | --- | --- | --- | --- | --- |
|  | 6 | **Fuel Tank** |  | 2015-01-05 | 2015-11-05 |  |  |  |  |  |  |
| P-MEP-FF-3493 |  | Material Submittals of Fuel Tank | 14d | 2015-01-05 | 2015-01-20 | PQ-CS-C-432, P-MEP-FF-3453 | 172d | 0d |  | Material Submittals [60 h] | 8,788.14 |
| P-MEP-FF-3503 |  | Material review & Approval of Fuel Tank | 14d | 2015-01-17 | 2015-02-01 | P-MEP-FF-3493 SS+10d, P-MEP-FF-3493 FF+10d | 257d | 132d |  | Material Approval [40 h] | 8,788.14 |
| P-MEP-FF-3513 |  | P.O of Fuel Tank | 2d | 2015-07-07 | 2015-07-08 | P-MEP-FF-3503, G-A-M-W-003 | 125d | 0d |  | Purchase Order [20 h] |  |
| P-MEP-FF-3523 |  | Lead Time & Delivery of Fuel Tank | 120d | 2015-07-09 | 2015-11-05 | P-MEP-FF-3513 | 152d | 1d | * JWM - 7 Days per week with no holidays | Lead Time & Delivery [600 h] |  |
|  | 7 | **Fire Hose Cabinets** |  | 2015-01-21 | 2015-08-20 |  |  |  |  |  |  |
| P-MEP-FF-3533 |  | Material Submittals of Fire Hose Cabinets | 14d | 2015-01-21 | 2015-02-05 | PQ-CS-C-432, P-MEP-FF-3493 | 172d | 0d |  | Material Submittals [60 h] | 8,788.14 |
| P-MEP-FF-3543 |  | Material review & Approval of Fire Hose Cabinets | 14d | 2015-02-02 | 2015-02-18 | P-MEP-FF-3533 SS+10d, P-MEP-FF-3533 FF+10d | 186d | 0d |  | Material Approval [40 h] | 8,788.14 |
| P-MEP-FF-3553 |  | P.O of Fire Hose Cabinets | 2d | 2015-02-19 | 2015-02-21 | P-MEP-FF-3543 | 186d | 0d |  | Purchase Order [20 h] |  |
| P-MEP-FF-3563 |  | Lead Time & Delivery of Fire Hose Cabinets | 180d | 2015-02-22 | 2015-08-20 | P-MEP-FF-3553 | 223d | 86d | * JWM - 7 Days per week with no holidays | Lead Time & Delivery [600 h] |  |
|  | 8 | **Fire Extinguishers** |  | 2015-02-07 | 2015-09-05 |  |  |  |  |  |  |
| P-MEP-FF-3573 |  | Material Submittals of Fire Extinguisher | 14d | 2015-02-07 | 2015-02-23 | PQ-CS-C-432, P-MEP-FF-3533 | 172d | 0d |  | Material Submittals [60 h] | 8,788.14 |
| P-MEP-FF-3583 |  | Material review & Approval of Fire Extinguisher | 14d | 2015-02-19 | 2015-03-07 | P-MEP-FF-3573 SS+10d, P-MEP-FF-3573 FF+10d | 172d | 0d |  | Material Approval [40 h] | 8,788.14 |
| P-MEP-FF-3593 |  | P.O of Fire Extinguisher | 2d | 2015-03-08 | 2015-03-09 | P-MEP-FF-3583 | 172d | 0d |  | Purchase Order [20 h] |  |
| P-MEP-FF-3603 |  | Lead Time & Delivery of Fire Extinguisher | 180d | 2015-03-10 | 2015-09-05 | P-MEP-FF-3593 | 207d | 70d | * JWM - 7 Days per week with no holidays | Lead Time & Delivery [600 h] |  |
|  | 9 | **FM 200 System** |  | 2014-11-16 | 2015-04-14 |  |  |  |  |  |  |
| P-MEP-FF-3613 |  | Material Submittals of FM 200 System | 14d | 2014-11-16 | 2014-12-01 | PQ-CS-C-432, P-MEP-FF-3013 | 138d | 0d |  | Material Submittals [60 h] | 8,788.14 |
| P-MEP-FF-3623 |  | Material review & Approval of FM 200 System | 14d | 2014-11-27 | 2014-12-13 | P-MEP-FF-3613 SS+10d, P-MEP-FF-3613 FF+10d | 152d | 0d |  | Material Approval [40 h] | 8,788.14 |
| P-MEP-FF-3633 |  | P.O of FM 200 System | 2d | 2014-12-14 | 2014-12-15 | P-MEP-FF-3623 | 152d | 0d |  | Purchase Order [20 h] |  |
| P-MEP-FF-3643 |  | Lead Time & Delivery of FM 200 System | 120d | 2014-12-16 | 2015-04-14 | P-MEP-FF-3633 | 180d | 111d | * JWM - 7 Days per week with no holidays | Lead Time & Delivery [600 h] |  |
|  | 10 | **Fire Suppression System** |  | 2014-12-02 | 2015-05-01 |  |  |  |  |  |  |
| P-MEP-FF-3653 |  | Material Submittals of Fire Suppression System | 14d | 2014-12-02 | 2014-12-17 | PQ-CS-C-432, P-MEP-FF-3613 | 138d | 0d |  | Material Submittals [60 h] | 8,788.14 |
| P-MEP-FF-3663 |  | Material review & Approval of Fire Suppression System | 14d | 2014-12-14 | 2014-12-30 | P-MEP-FF-3653 SS+10d, P-MEP-FF-3653 FF+10d | 138d | 0d |  | Material Approval [40 h] | 8,788.14 |
| P-MEP-FF-3673 |  | P.O of Fire Suppression System | 2d | 2014-12-31 | 2015-01-01 | P-MEP-FF-3663 | 138d | 0d |  | Purchase Order [20 h] |  |
| P-MEP-FF-3683 |  | Lead Time & Delivery of Fire Suppression System | 120d | 2015-01-02 | 2015-05-01 | P-MEP-FF-3673 | 163d | 94d | * JWM - 7 Days per week with no holidays | Lead Time & Delivery [600 h] |  |

Notes:
- P-MEP-FF-3493: Expenses: 1 8788.14
- P-MEP-FF-3503: Expenses: 1 8788.14
- P-MEP-FF-3533: Expenses: 1 8788.14
- P-MEP-FF-3543: Expenses: 1 8788.14
- P-MEP-FF-3573: Expenses: 1 8788.14
- P-MEP-FF-3583: Expenses: 1 8788.14
- P-MEP-FF-3613: Expenses: 1 8788.14
- P-MEP-FF-3623: Expenses: 1 8788.14
- P-MEP-FF-3653: Expenses: 1 8788.14
- P-MEP-FF-3663: Expenses: 1 8788.14

| ID | WBS | Activity | Duration | Start | Finish | Predecessors | Total float | Free float | Calendar | Resources | Cost |
| --- | --- | --- | --- | --- | --- | --- | --- | --- | --- | --- | --- |
|  | 3 | **Plumbing, Drainage & Irrigation** |  | 2014-10-14 | 2015-11-17 |  |  |  |  |  |  |
|  | 10 | **Hot & Cold Water Piping** |  | 2014-10-14 | 2015-03-12 |  |  |  |  |  |  |
| P-MEP-P-2293 |  | Material Submittals of Hot & Cold Water pipes | 14d | 2014-10-14 | 2014-10-29 | PQ-CS-C-432 | 113d | 0d |  | Material Submittals [60 h] |  |
| P-MEP-P-2303 |  | Material review & Approval of Hot & Cold Water pipes | 14d | 2014-10-26 | 2014-11-10 | P-MEP-P-2293 SS+10d, P-MEP-P-2293 FF+10d | 113d | 0d |  | Material Approval [40 h] |  |
| P-MEP-P-2313 |  | P.O of Hot & Cold Water pipes | 2d | 2014-11-11 | 2014-11-12 | P-MEP-P-2303 | 113d | 0d |  | Purchase Order [20 h] |  |
| P-MEP-P-2323 |  | Lead Time & Delivery of Hot & Cold Water pipes | 120d | 2014-11-13 | 2015-03-12 | P-MEP-P-2313 | 135d | 13d | * JWM - 7 Days per week with no holidays | Lead Time & Delivery [600 h] |  |
|  | 11 | **Insulation** |  | 2014-10-30 | 2015-03-29 |  |  |  |  |  |  |
| P-MEP-P-2333 |  | Material Submittals of Piping Insulation | 14d | 2014-10-30 | 2014-11-15 | PQ-CS-C-432, P-MEP-P-2293 | 133d | 0d |  | Material Submittals [60 h] |  |
| P-MEP-P-2343 |  | Material review & Approval of Piping Insulation | 14d | 2014-11-11 | 2014-11-26 | P-MEP-P-2333 SS+10d, P-MEP-P-2333 FF+10d | 185d | 0d |  | Material Approval [40 h] |  |
| P-MEP-P-2353 |  | P.O of Piping Insulation | 2d | 2014-11-27 | 2014-11-29 | P-MEP-P-2343 | 185d | 0d |  | Purchase Order [20 h] |  |
| P-MEP-P-2363 |  | Lead Time & Delivery of Piping Insulation | 120d | 2014-11-30 | 2015-03-29 | P-MEP-P-2353 | 218d | 20d | * JWM - 7 Days per week with no holidays | Lead Time & Delivery [600 h] |  |
|  | 12 | **GRP Water Tanks** |  | 2014-11-16 | 2015-04-14 |  |  |  |  |  |  |
| P-MEP-P-2373 |  | Material Submittals of GRP Water Tank | 14d | 2014-11-16 | 2014-12-01 | PQ-CS-C-432, P-MEP-P-2333 | 133d | 0d |  | Material Submittals [60 h] | 1,275.71 |
| P-MEP-P-2383 |  | Material review & Approval of GRP Water Tank | 14d | 2014-11-27 | 2014-12-13 | P-MEP-P-2373 SS+10d, P-MEP-P-2373 FF+10d | 274d | 0d |  | Material Approval [40 h] | 1,275.71 |
| P-MEP-P-2393 |  | P.O of GRP Water Tank | 2d | 2014-12-14 | 2014-12-15 | P-MEP-P-2383 | 274d | 0d |  | Purchase Order [20 h] |  |
| P-MEP-P-2403 |  | Lead Time & Delivery of GRP Water Tank | 120d | 2014-12-16 | 2015-04-14 | P-MEP-P-2393 | 328d | 0d | * JWM - 7 Days per week with no holidays | Lead Time & Delivery [600 h] |  |
|  | 2 | **UPVC pipes** |  | 2014-10-14 | 2015-03-12 |  |  |  |  |  |  |
| P-MEP-P-2413 |  | Material Submittals of UPVC Pipes | 14d | 2014-10-14 | 2014-10-29 | PQ-CS-C-432, P-MEP-P-2293 SS | 113d | 0d |  | Material Submittals [60 h] | 1,275.71 |
| P-MEP-P-2423 |  | Material review & Approval of UPVC Pipes | 14d | 2014-10-26 | 2014-11-10 | P-MEP-P-2413 SS+10d, P-MEP-P-2413 FF+10d | 113d | 0d |  | Material Approval [40 h] | 1,275.71 |
| P-MEP-P-2433 |  | P.O of UPVC Pipes | 2d | 2014-11-11 | 2014-11-12 | P-MEP-P-2423 | 113d | 0d |  | Purchase Order [20 h] |  |
| P-MEP-P-2443 |  | Lead Time & Delivery of UPVC Pipes | 120d | 2014-11-13 | 2015-03-12 | P-MEP-P-2433 | 135d | 13d | * JWM - 7 Days per week with no holidays | Lead Time & Delivery [600 h] |  |
|  | 3 | **Cast iron pipe** |  | 2014-10-14 | 2015-03-12 |  |  |  |  |  |  |
| P-MEP-P-2453 |  | Material Submittals of Cast Iron Pipes | 14d | 2014-10-14 | 2014-10-29 | PQ-CS-C-432, P-MEP-P-2413 SS | 113d | 0d |  | Material Submittals [60 h] | 1,275.71 |
| P-MEP-P-2463 |  | Material review & Approval of Cast Iron Pipes | 14d | 2014-10-26 | 2014-11-10 | P-MEP-P-2453 SS+10d, P-MEP-P-2453 FF+10d | 113d | 0d |  | Material Approval [40 h] | 1,275.71 |
| P-MEP-P-2473 |  | P.O of Cast Iron Pipes | 2d | 2014-11-11 | 2014-11-12 | P-MEP-P-2463 | 113d | 0d |  | Purchase Order [20 h] |  |
| P-MEP-P-2483 |  | Lead Time & Delivery of Cast Iron Pipes | 120d | 2014-11-13 | 2015-03-12 | P-MEP-P-2473 | 135d | 13d | * JWM - 7 Days per week with no holidays | Lead Time & Delivery [600 h] |  |

Notes:
- P-MEP-P-2373: Expenses: 1 1275.71
- P-MEP-P-2383: Expenses: 1 1275.71
- P-MEP-P-2413: Expenses: 1 1275.71
- P-MEP-P-2423: Expenses: 1 1275.71
- P-MEP-P-2453: Expenses: 1 1275.71
- P-MEP-P-2463: Expenses: 1 1275.71

| ID | WBS | Activity | Duration | Start | Finish | Predecessors | Total float | Free float | Calendar | Resources |
| --- | --- | --- | --- | --- | --- | --- | --- | --- | --- | --- |
|  | 9 | **Valves & Accessories** |  | 2014-12-02 | 2015-05-01 |  |  |  |  |  |
| P-MEP-P-2493 |  | Material Submittals of Water Valves & Accessories | 14d | 2014-12-02 | 2014-12-17 | PQ-CS-C-432, P-MEP-P-2453, P-MEP-P-2373 | 133d | 0d |  | Material Submittals [60 h] |
| P-MEP-P-2503 |  | Material review & Approval of Water Valves & Accessories | 14d | 2014-12-14 | 2014-12-30 | P-MEP-P-2493 SS+10d, P-MEP-P-2493 FF+10d | 165d | 0d |  | Material Approval [40 h] |
| P-MEP-P-2513 |  | P.O of Water Valves & Accessories | 2d | 2014-12-31 | 2015-01-01 | P-MEP-P-2503 | 165d | 0d |  | Purchase Order [20 h] |
| P-MEP-P-2523 |  | Lead Time & Delivery of Water Valves & Accessories | 120d | 2015-01-02 | 2015-05-01 | P-MEP-P-2513 | 194d | 46d | * JWM - 7 Days per week with no holidays | Lead Time & Delivery [600 h] |
|  | 5 | **Floor Drains** |  | 2014-12-20 | 2015-05-18 |  |  |  |  |  |
| P-MEP-P-2533 |  | Material Submittals of Floor Drain | 14d | 2014-12-20 | 2015-01-04 | PQ-CS-C-432, P-MEP-P-2493 | 133d | 0d |  | Material Submittals [60 h] |
| P-MEP-P-2543 |  | Material review & Approval of Floor Drain | 14d | 2014-12-31 | 2015-01-15 | P-MEP-P-2533 SS+10d, P-MEP-P-2533 FF+10d | 442d | 0d |  | Material Approval [40 h] |
| P-MEP-P-2553 |  | P.O of Floor Drain | 2d | 2015-01-17 | 2015-01-18 | P-MEP-P-2543 | 442d | 0d |  | Purchase Order [20 h] |
| P-MEP-P-2563 |  | Lead Time & Delivery of Floor Drain | 120d | 2015-01-19 | 2015-05-18 | P-MEP-P-2553 | 525d | 266d | * JWM - 7 Days per week with no holidays | Lead Time & Delivery [600 h] |
|  | 4 | **Clean Out** |  | 2015-01-05 | 2015-06-03 |  |  |  |  |  |
| P-MEP-P-2573 |  | Material Submittals of Clean Out | 14d | 2015-01-05 | 2015-01-20 | PQ-CS-C-432, P-MEP-P-2533 | 133d | 0d |  | Material Submittals [60 h] |
| P-MEP-P-2583 |  | Material review & Approval of Clean Out | 14d | 2015-01-17 | 2015-02-01 | P-MEP-P-2573 SS+10d, P-MEP-P-2573 FF+10d | 428d | 0d |  | Material Approval [40 h] |
| P-MEP-P-2593 |  | P.O of Clean Out | 2d | 2015-02-02 | 2015-02-03 | P-MEP-P-2583 | 428d | 0d |  | Purchase Order [20 h] |
| P-MEP-P-2603 |  | Lead Time & Delivery of Clean Out | 120d | 2015-02-04 | 2015-06-03 | P-MEP-P-2593 | 509d | 250d | * JWM - 7 Days per week with no holidays | Lead Time & Delivery [600 h] |
|  | 6 | **Grease, Petrol & Oil interceptor** |  | 2015-01-21 | 2015-06-21 |  |  |  |  |  |
| P-MEP-P-2613 |  | Material Submittals of Greace, Petrol & OIl Interceptor | 14d | 2015-01-21 | 2015-02-05 | PQ-CS-C-432, P-MEP-P-2573 | 133d | 0d |  | Material Submittals [60 h] |
| P-MEP-P-2623 |  | Material review & Approval of Greace, Petrol & OIl Interceptor | 14d | 2015-02-02 | 2015-02-18 | P-MEP-P-2613 SS+10d, P-MEP-P-2613 FF+10d | 384d | 0d |  | Material Approval [40 h] |
| P-MEP-P-2633 |  | P.O of Greace, Petrol & OIl Interceptor | 2d | 2015-02-19 | 2015-02-21 | P-MEP-P-2623 | 384d | 0d |  | Purchase Order [20 h] |
| P-MEP-P-2643 |  | Lead Time & Delivery of Greace, Petrol & OIl Interceptor | 120d | 2015-02-22 | 2015-06-21 | P-MEP-P-2633 | 456d | 334d | * JWM - 7 Days per week with no holidays | Lead Time & Delivery [600 h] |
|  | 13 | **Water Pumps** |  | 2015-02-07 | 2015-07-07 |  |  |  |  |  |
| P-MEP-P-2653 |  | Material Submittals of Water Pumps | 14d | 2015-02-07 | 2015-02-23 | PQ-CS-C-432, P-MEP-P-2613 | 133d | 0d |  | Material Submittals [60 h] |
| P-MEP-P-2663 |  | Material review & Approval of Water Pumps | 14d | 2015-02-19 | 2015-03-07 | P-MEP-P-2653 SS+10d, P-MEP-P-2653 FF+10d | 133d | 0d |  | Material Approval [40 h] |
| P-MEP-P-2673 |  | P.O of Water Pumps | 2d | 2015-03-08 | 2015-03-09 | P-MEP-P-2663 | 133d | 0d |  | Purchase Order [20 h] |
| P-MEP-P-2683 |  | Lead Time & Delivery of Water Pumps | 120d | 2015-03-10 | 2015-07-07 | P-MEP-P-2673 | 157d | 0d | * JWM - 7 Days per week with no holidays | Lead Time & Delivery [600 h] |

| ID | WBS | Activity | Duration | Start | Finish | Predecessors | Total float | Free float | Calendar | Resources | Cost |
| --- | --- | --- | --- | --- | --- | --- | --- | --- | --- | --- | --- |
|  | 15 | **Heat Exchangers** |  | 2015-02-24 | 2015-07-23 |  |  |  |  |  |  |
| P-MEP-P-2693 |  | Material Submittals of Heat Exchanger | 14d | 2015-02-24 | 2015-03-11 | PQ-CS-C-432, P-MEP-P-2653 | 180d | 0d |  | Material Submittals [60 h] | 959.26 |
| P-MEP-P-2703 |  | Material review & Approval of Heat Exchanger | 14d | 2015-03-08 | 2015-03-23 | P-MEP-P-2693 SS+10d, P-MEP-P-2693 FF+10d | 306d | 0d |  | Material Approval [40 h] | 959.26 |
| P-MEP-P-2713 |  | P.O of Heat Exchanger | 2d | 2015-03-24 | 2015-03-25 | P-MEP-P-2703 | 306d | 0d |  | Purchase Order [20 h] |  |
| P-MEP-P-2723 |  | Lead Time & Delivery of Heat Exchanger | 120d | 2015-03-26 | 2015-07-23 | P-MEP-P-2713 | 365d | 68d | * JWM - 7 Days per week with no holidays | Lead Time & Delivery [600 h] |  |
|  | 14 | **Hot Water Boilers** |  | 2015-03-12 | 2015-08-09 |  |  |  |  |  |  |
| P-MEP-P-2733 |  | Material Submittals of Hot Water Boiler | 14d | 2015-03-12 | 2015-03-28 | PQ-CS-C-432, P-MEP-P-2693 | 180d | 0d |  | Material Submittals [60 h] | 959.26 |
| P-MEP-P-2743 |  | Material review & Approval of Hot Water Boiler | 14d | 2015-03-24 | 2015-04-08 | P-MEP-P-2733 SS+10d, P-MEP-P-2733 FF+10d | 316d | 0d |  | Material Approval [40 h] | 959.26 |
| P-MEP-P-2753 |  | P.O of Hot Water Boiler | 2d | 2015-04-09 | 2015-04-11 | P-MEP-P-2743 | 316d | 0d |  | Purchase Order [20 h] |  |
| P-MEP-P-2763 |  | Lead Time & Delivery of Hot Water Boiler | 120d | 2015-04-12 | 2015-08-09 | P-MEP-P-2753 | 377d | 80d | * JWM - 7 Days per week with no holidays | Lead Time & Delivery [600 h] |  |
|  | 16 | **Calorifiers** |  | 2015-03-29 | 2015-08-25 |  |  |  |  |  |  |
| P-MEP-P-2773 |  | Material Submittals of Calorifiers | 14d | 2015-03-29 | 2015-04-13 | PQ-CS-C-432, P-MEP-P-2733 | 180d | 0d |  | Material Submittals [60 h] | 959.26 |
| P-MEP-P-2783 |  | Material review & Approval of Calorifiers | 14d | 2015-04-09 | 2015-04-25 | P-MEP-P-2773 SS+10d, P-MEP-P-2773 FF+10d | 222d | 0d |  | Material Approval [40 h] | 959.26 |
| P-MEP-P-2793 |  | P.O of Calorifiers | 2d | 2015-04-26 | 2015-04-27 | P-MEP-P-2783 | 222d | 0d |  | Purchase Order [20 h] |  |
| P-MEP-P-2803 |  | Lead Time & Delivery of Calorifiers | 120d | 2015-04-28 | 2015-08-25 | P-MEP-P-2793 | 266d | 62d | * JWM - 7 Days per week with no holidays | Lead Time & Delivery [600 h] |  |
|  | 17 | **Water filter, softner & treatment system** |  | 2015-04-14 | 2015-09-10 |  |  |  |  |  |  |
| P-MEP-P-2813 |  | Material Submittal of Water Filter, Softner& Treatment System | 14d | 2015-04-14 | 2015-04-29 | PQ-CS-C-432, P-MEP-P-2773 | 180d | 0d |  |  |  |
| P-MEP-P-2823 |  | Material review & Approval of Water Filter, Softner& Treatment System | 14d | 2015-04-26 | 2015-05-11 | P-MEP-P-2813 SS+10d, P-MEP-P-2813 FF+10d | 208d | 0d |  | Material Approval [40 h] |  |
| P-MEP-P-2833 |  | P.O of Water Filter, Softner& Treatment System | 2d | 2015-05-12 | 2015-05-13 | P-MEP-P-2823 | 208d | 0d |  | Purchase Order [20 h] |  |
| P-MEP-P-2843 |  | Lead Time & Delivery of Water Filter, Softner& Treatment System | 120d | 2015-05-14 | 2015-09-10 | P-MEP-P-2833 | 250d | 46d | * JWM - 7 Days per week with no holidays | Lead Time & Delivery [600 h] |  |
|  | 7 | **Submersible sump pump** |  | 2015-04-30 | 2015-09-27 |  |  |  |  |  |  |
| P-MEP-P-2853 |  | Material Submittals of Submersible Sump Pump | 14d | 2015-04-30 | 2015-05-16 | PQ-CS-C-432, P-MEP-P-2813 | 180d | 0d |  | Material Submittals [60 h] |  |
| P-MEP-P-2863 |  | Material review & Approval of Submersible Sump Pump | 14d | 2015-05-12 | 2015-05-27 | P-MEP-P-2853 SS+10d, P-MEP-P-2853 FF+10d | 194d | 0d |  | Material Approval [40 h] |  |
| P-MEP-P-2873 |  | P.O of Submersible Sump Pump | 2d | 2015-05-28 | 2015-05-30 | P-MEP-P-2863 | 194d | 0d |  | Purchase Order [20 h] |  |
| P-MEP-P-2883 |  | Lead Time & Delivery of Submersible Sump Pump | 120d | 2015-05-31 | 2015-09-27 | P-MEP-P-2873 | 233d | 58d | * JWM - 7 Days per week with no holidays | Lead Time & Delivery [600 h] |  |

Notes:
- P-MEP-P-2693: Expenses: 1 959.26
- P-MEP-P-2703: Expenses: 1 959.26
- P-MEP-P-2733: Expenses: 1 959.26
- P-MEP-P-2743: Expenses: 1 959.26
- P-MEP-P-2773: Expenses: 1 959.26
- P-MEP-P-2783: Expenses: 1 959.26

| ID | WBS | Activity | Duration | Start | Finish | Predecessors | Total float | Free float | Calendar | Resources | Cost |
| --- | --- | --- | --- | --- | --- | --- | --- | --- | --- | --- | --- |
|  | 8 | **Sump Pits** |  | 2015-05-17 | 2015-10-13 |  |  |  |  |  |  |
| P-MEP-P-2893 |  | Material Submittals of Sump Pits switch controllers | 14d | 2015-05-17 | 2015-06-01 | PQ-CS-C-432, P-MEP-P-2853 | 180d | 0d |  | Material Submittals [60 h] |  |
| P-MEP-P-2903 |  | Material review & Approval of Sump Pits switch controllers | 14d | 2015-05-28 | 2015-06-13 | P-MEP-P-2893 SS+10d, P-MEP-P-2893 FF+10d | 180d | 0d |  | Material Approval [40 h] |  |
| P-MEP-P-2913 |  | P.O of Sump Pits switch controllers | 2d | 2015-06-14 | 2015-06-15 | P-MEP-P-2903 | 180d | 0d |  | Purchase Order [20 h] |  |
| P-MEP-P-2923 |  | Lead Time & Delivery of Sump Pits switch controllers | 120d | 2015-06-16 | 2015-10-13 | P-MEP-P-2913 | 217d | 0d | * JWM - 7 Days per week with no holidays | Lead Time & Delivery [600 h] |  |
|  | 1 | **Sanitary Fixtures** |  | 2015-06-02 | 2015-10-29 |  |  |  |  |  |  |
| P-MEP-P-2933 |  | Material Submittals of Sanitary Fixtures | 14d | 2015-06-02 | 2015-06-17 | PQ-CS-C-432, P-MEP-P-2893 | 302d | 0d |  | Material Submittals [60 h] |  |
| P-MEP-P-2943 |  | Material review & Approval of Sanitary Fixtures | 14d | 2015-06-14 | 2015-06-29 | P-MEP-P-2933 SS+10d, P-MEP-P-2933 FF+10d | 302d | 0d |  | Material Approval [40 h] |  |
| P-MEP-P-2953 |  | P.O of Sanitary Fixtures | 2d | 2015-06-30 | 2015-07-01 | P-MEP-P-2943 | 302d | 0d |  | Purchase Order [20 h] |  |
| P-MEP-P-2963 |  | Lead Time & Delivery of Sanitary Fixtures | 120d | 2015-07-02 | 2015-10-29 | P-MEP-P-2953 | 361d | 102d | * JWM - 7 Days per week with no holidays | Lead Time & Delivery [600 h] |  |
|  | 18 | **Irrigation System** |  | 2015-06-18 | 2015-11-17 |  |  |  |  |  |  |
| P-MEP-P-5853 |  | Material Submittals of Irrigation System | 14d | 2015-06-18 | 2015-07-04 | PQ-CS-C-432, P-MEP-P-2933 | 417d | 0d |  | Material Submittals [60 h] | 32,803.82 |
| P-MEP-P-5863 |  | Material review & Approval of Irrigation System | 14d | 2015-06-30 | 2015-07-18 | P-MEP-P-5853 SS+10d, P-MEP-P-5853 FF+10d | 417d | 0d |  | Material Approval [40 h] | 32,803.82 |
| P-MEP-P-5873 |  | P.O of Irrigation System | 2d | 2015-07-19 | 2015-07-20 | P-MEP-P-5863 | 417d | 0d |  | Purchase Order [20 h] |  |
| P-MEP-P-5883 |  | Lead Time & Delivery of Irrigation System | 120d | 2015-07-21 | 2015-11-17 | P-MEP-P-5873 | 500d | 255d | * JWM - 7 Days per week with no holidays | Lead Time & Delivery [600 h] |  |
|  | 5 | **ELV systems** |  | 2014-11-24 | 2015-09-18 |  |  |  |  |  |  |
|  | 1 | **Room Management System** |  | 2014-11-24 | 2015-09-02 |  |  |  |  |  |  |
|  | 1 | **Thermostat and HVAC Controls** |  | 2014-11-24 | 2015-04-23 |  |  |  |  |  |  |
| P-MEP-P-3373 |  | Material Submittals of Thermostate & HVAC controller | 14d | 2014-11-24 | 2014-12-09 | PQ-CS-C-492 | 145d | 0d |  | Material Submittals [60 h] |  |
| P-MEP-P-3383 |  | Material review & Approval of Thermostate & HVAC controller | 14d | 2014-12-06 | 2014-12-22 | P-MEP-P-3373 SS+10d, P-MEP-P-3373 FF+10d | 215d | 0d |  | Material Approval [40 h] |  |
| P-MEP-P-3393 |  | P.O of Thermostate & HVAC controller | 2d | 2014-12-23 | 2014-12-24 | P-MEP-P-3383 | 215d | 0d |  | Purchase Order [20 h] |  |
| P-MEP-P-3403 |  | Lead Time & Delivery of Thermostate & HVAC controller | 120d | 2014-12-25 | 2015-04-23 | P-MEP-P-3393 | 255d | 85d | * JWM - 7 Days per week with no holidays | Lead Time & Delivery [600 h] |  |
|  | 2 | **Magnetic door switch** |  | 2014-12-10 | 2015-05-10 |  |  |  |  |  |  |
| P-MEP-P-3413 |  | Material Submittals of Magnetic Door Switch | 14d | 2014-12-10 | 2014-12-27 | PQ-CS-C-492, P-MEP-P-3373 | 145d | 0d |  | Material Submittals [60 h] |  |
| P-MEP-P-3423 |  | Material review & Approval of Magnetic Door Switch | 14d | 2014-12-23 | 2015-01-07 | P-MEP-P-3413 SS+10d, P-MEP-P-3413 FF+10d | 273d | 0d |  | Material Approval [40 h] |  |
| P-MEP-P-3433 |  | P.O of Magnetic Door Switch | 2d | 2015-01-08 | 2015-01-10 | P-MEP-P-3423 | 273d | 0d |  | Purchase Order [20 h] |  |
| P-MEP-P-3443 |  | Lead Time & Delivery of Magnetic Door Switch | 120d | 2015-01-11 | 2015-05-10 | P-MEP-P-3433 | 325d | 115d | * JWM - 7 Days per week with no holidays | Lead Time & Delivery [600 h] |  |

Notes:
- P-MEP-P-5853: Expenses: 1 32803.8
- P-MEP-P-5863: Expenses: 1 32803.8

| ID | WBS | Activity | Duration | Start | Finish | Predecessors | Total float | Free float | Calendar | Resources |
| --- | --- | --- | --- | --- | --- | --- | --- | --- | --- | --- |
|  | 6 | **Door chime** |  | 2014-12-28 | 2015-05-26 |  |  |  |  |  |
| P-MEP-P-3453 |  | Material Submittals of Door Chime | 14d | 2014-12-28 | 2015-01-12 | PQ-CS-C-492, P-MEP-P-3413 | 145d | 0d |  | Material Submittals [60 h] |
| P-MEP-P-3463 |  | Material review & Approval of Door Chime | 14d | 2015-01-08 | 2015-01-24 | P-MEP-P-3453 SS+10d, P-MEP-P-3453 FF+10d | 259d | 0d |  | Material Approval [40 h] |
| P-MEP-P-3473 |  | P.O of Door Chime | 2d | 2015-01-25 | 2015-01-26 | P-MEP-P-3463 | 259d | 0d |  | Purchase Order [20 h] |
| P-MEP-P-3483 |  | Lead Time & Delivery of Door Chime | 120d | 2015-01-27 | 2015-05-26 | P-MEP-P-3473 | 309d | 99d | * JWM - 7 Days per week with no holidays | Lead Time & Delivery [600 h] |
|  | 7 | **LCD controller** |  | 2015-01-13 | 2015-06-12 |  |  |  |  |  |
| P-MEP-P-3493 |  | Material Submittals of LCD Controller | 14d | 2015-01-13 | 2015-01-28 | PQ-CS-C-492, P-MEP-P-3453 | 145d | 0d |  | Material Submittals [60 h] |
| P-MEP-P-3503 |  | Material review & Approval of LCD Controller | 14d | 2015-01-25 | 2015-02-09 | P-MEP-P-3493 SS+10d, P-MEP-P-3493 FF+10d | 245d | 0d |  | Material Approval [40 h] |
| P-MEP-P-3513 |  | P.O of LCD Controller | 2d | 2015-02-11 | 2015-02-12 | P-MEP-P-3503 | 245d | 0d |  | Purchase Order [20 h] |
| P-MEP-P-3523 |  | Lead Time & Delivery of LCD Controller | 120d | 2015-02-13 | 2015-06-12 | P-MEP-P-3513 | 292d | 82d | * JWM - 7 Days per week with no holidays | Lead Time & Delivery [600 h] |
|  | 3 | **Switches and Guest Control** |  | 2015-01-29 | 2015-06-29 |  |  |  |  |  |
| P-MEP-P-3533 |  | Material Submittals of Switches & Guest Control | 14d | 2015-01-29 | 2015-02-15 | PQ-CS-C-492, P-MEP-P-3493 | 145d | 0d |  | Material Submittals [60 h] |
| P-MEP-P-3543 |  | Material review & Approval of Switches & Guest Control | 14d | 2015-02-11 | 2015-02-26 | P-MEP-P-3533 SS+10d, P-MEP-P-3533 FF+10d | 159d | 0d |  | Material Approval [40 h] |
| P-MEP-P-3553 |  | P.O of Switches & Guest Control | 2d | 2015-02-28 | 2015-03-01 | P-MEP-P-3543 | 159d | 0d |  | Purchase Order [20 h] |
| P-MEP-P-3563 |  | Lead Time & Delivery of Switches & Guest Control | 120d | 2015-03-02 | 2015-06-29 | P-MEP-P-3553 | 188d | 18d | * JWM - 7 Days per week with no holidays | Lead Time & Delivery [600 h] |
|  | 4 | **Ethernet room gateway** |  | 2015-02-16 | 2015-07-15 |  |  |  |  |  |
| P-MEP-P-3573 |  | Material Submittals of Ethernet Room Gaeway | 14d | 2015-02-16 | 2015-03-03 | PQ-CS-C-492, P-MEP-P-3533 | 145d | 0d |  | Material Submittals [60 h] |
| P-MEP-P-3583 |  | Material review & Approval of Ethernet Room Gaeway | 14d | 2015-02-28 | 2015-03-15 | P-MEP-P-3573 SS+10d, P-MEP-P-3573 FF+10d | 145d | 0d |  | Material Approval [40 h] |
| P-MEP-P-3593 |  | P.O of Ethernet Room Gaeway | 2d | 2015-03-16 | 2015-03-17 | P-MEP-P-3583 | 145d | 0d |  | Purchase Order [20 h] |
| P-MEP-P-3603 |  | Lead Time & Delivery of Ethernet Room Gaeway | 120d | 2015-03-18 | 2015-07-15 | P-MEP-P-3593 | 172d | 2d | * JWM - 7 Days per week with no holidays | Lead Time & Delivery [600 h] |
|  | 8 | **Dell rack mount server** |  | 2015-03-04 | 2015-07-31 |  |  |  |  |  |
| P-MEP-P-3613 |  | Material Submittals of Dell Rack mount server | 14d | 2015-03-04 | 2015-03-19 | PQ-CS-C-492, P-MEP-P-3573 | 175d | 0d |  | Material Submittals [60 h] |
| P-MEP-P-3623 |  | Material review & Approval of Dell Rack mount server | 14d | 2015-03-16 | 2015-03-31 | P-MEP-P-3613 SS+10d, P-MEP-P-3613 FF+10d | 203d | 0d |  | Material Approval [40 h] |
| P-MEP-P-3633 |  | P.O of Dell Rack mount server | 2d | 2015-04-01 | 2015-04-02 | P-MEP-P-3623 | 203d | 0d |  | Purchase Order [20 h] |
| P-MEP-P-3643 |  | Lead Time & Delivery of Dell Rack mount server | 120d | 2015-04-03 | 2015-07-31 | P-MEP-P-3633 | 243d | 33d | * JWM - 7 Days per week with no holidays | Lead Time & Delivery [600 h] |

| ID | WBS | Activity | Duration | Start | Finish | Predecessors | Total float | Free float | Calendar | Resources |
| --- | --- | --- | --- | --- | --- | --- | --- | --- | --- | --- |
|  | 5 | **Modeva light switch** |  | 2015-03-21 | 2015-08-17 |  |  |  |  |  |
| P-MEP-P-3653 |  | Material Submittals of Modeva Light Switch | 14d | 2015-03-21 | 2015-04-05 | PQ-CS-C-492, P-MEP-P-3613 | 175d | 0d |  | Material Submittals [60 h] |
| P-MEP-P-3663 |  | Material review & Approval of Modeva Light Switch | 14d | 2015-04-01 | 2015-04-16 | P-MEP-P-3653 SS+10d, P-MEP-P-3653 FF+10d | 189d | 0d |  | Material Approval [40 h] |
| P-MEP-P-3673 |  | P.O of Modeva Light Switch | 2d | 2015-04-18 | 2015-04-19 | P-MEP-P-3663 | 189d | 0d |  | Purchase Order [20 h] |
| P-MEP-P-3683 |  | Lead Time & Delivery of Modeva Light Switch | 120d | 2015-04-20 | 2015-08-17 | P-MEP-P-3673 | 226d | 16d | * JWM - 7 Days per week with no holidays | Lead Time & Delivery [600 h] |
|  | 9 | **CBL programming tool & Modeva TBL** |  | 2015-04-06 | 2015-09-02 |  |  |  |  |  |
| P-MEP-P-3693 |  | Material Submittals of CBL programming tool & Modeva TBL | 14d | 2015-04-06 | 2015-04-21 | PQ-CS-C-492, P-MEP-P-3653 | 175d | 0d |  | Material Submittals [60 h] |
| P-MEP-P-3703 |  | Material review & Approval of CBL programming tool & Modeva TBL | 14d | 2015-04-18 | 2015-05-03 | P-MEP-P-3693 SS+10d, P-MEP-P-3693 FF+10d | 175d | 0d |  | Material Approval [40 h] |
| P-MEP-P-3713 |  | P.O of CBL programming tool & Modeva TBL | 2d | 2015-05-04 | 2015-05-05 | P-MEP-P-3703 | 175d | 0d |  | Purchase Order [20 h] |
| P-MEP-P-3723 |  | Lead Time & Delivery of CBL programming tool & Modeva TBL | 120d | 2015-05-06 | 2015-09-02 | P-MEP-P-3713 | 210d | 0d | * JWM - 7 Days per week with no holidays | Lead Time & Delivery [600 h] |
|  | 12 | **Fire Alarm & Detection System** |  | 2014-11-24 | 2015-07-15 |  |  |  |  |  |
|  | 1 | **Fire Alarm Cabling** |  | 2014-11-24 | 2015-04-23 |  |  |  |  |  |
| P-MEP-P-4173 |  | Material Submittals of Fire Alarm Cabling | 14d | 2014-11-24 | 2014-12-09 | PQ-CS-C-492 | 159d | 0d |  | Material Submittals [60 h] |
| P-MEP-P-4183 |  | Material review & Approval of Fire Alarm Cabling | 14d | 2014-12-06 | 2014-12-22 | P-MEP-P-4173 SS+10d, P-MEP-P-4173 FF+10d | 190d | 0d |  | Material Approval [40 h] |
| P-MEP-P-4193 |  | P.O of Fire Alarm Cabling | 2d | 2014-12-23 | 2014-12-24 | P-MEP-P-4183 | 190d | 0d |  | Purchase Order [20 h] |
| P-MEP-P-4203 |  | Lead Time & Delivery of Fire Alarm Cabling | 120d | 2014-12-25 | 2015-04-23 | P-MEP-P-4193 | 225d | 71d | * JWM - 7 Days per week with no holidays | Lead Time & Delivery [600 h] |
|  | 2 | **Heat detector** |  | 2014-12-10 | 2015-05-10 |  |  |  |  |  |
| P-MEP-P-4213 |  | Material Submittals of Heat Detector | 14d | 2014-12-10 | 2014-12-27 | PQ-CS-C-492, P-MEP-P-4173 | 159d | 0d |  | Material Submittals [60 h] |
| P-MEP-P-4223 |  | Material review & Approval of Heat Detector | 14d | 2014-12-23 | 2015-01-07 | P-MEP-P-4213 SS+10d, P-MEP-P-4213 FF+10d | 201d | 0d |  | Material Approval [40 h] |
| P-MEP-P-4233 |  | P.O of Heat Detector | 2d | 2015-01-08 | 2015-01-10 | P-MEP-P-4223 | 201d | 0d |  | Purchase Order [20 h] |
| P-MEP-P-4243 |  | Lead Time & Delivery of Heat Detector | 120d | 2015-01-11 | 2015-05-10 | P-MEP-P-4233 | 238d | 85d | * JWM - 7 Days per week with no holidays | Lead Time & Delivery [600 h] |
|  | 3 | **Smoke detector** |  | 2014-12-28 | 2015-05-26 |  |  |  |  |  |
| P-MEP-P-4253 |  | Material Submittals of Smoke Detector | 14d | 2014-12-28 | 2015-01-12 | PQ-CS-C-492, P-MEP-P-4213 | 159d | 0d |  | Material Submittals [60 h] |
| P-MEP-P-4263 |  | Material review & Approval of Smoke Detector | 14d | 2015-01-08 | 2015-01-24 | P-MEP-P-4253 SS+10d, P-MEP-P-4253 FF+10d | 187d | 0d |  | Material Approval [40 h] |
| P-MEP-P-4273 |  | P.O of Smoke Detector | 2d | 2015-01-25 | 2015-01-26 | P-MEP-P-4263 | 187d | 0d |  | Purchase Order [20 h] |
| P-MEP-P-4283 |  | Lead Time & Delivery of Smoke Detector | 120d | 2015-01-27 | 2015-05-26 | P-MEP-P-4273 | 222d | 69d | * JWM - 7 Days per week with no holidays | Lead Time & Delivery [600 h] |

| ID | WBS | Activity | Duration | Start | Finish | Predecessors | Total float | Free float | Calendar | Resources |
| --- | --- | --- | --- | --- | --- | --- | --- | --- | --- | --- |
|  | 4 | **Flame detector** |  | 2015-01-13 | 2015-06-12 |  |  |  |  |  |
| P-MEP-P-4293 |  | Material Submittals of Flame Detector | 14d | 2015-01-13 | 2015-01-28 | PQ-CS-C-492, P-MEP-P-4253 | 159d | 0d |  | Material Submittals [60 h] |
| P-MEP-P-4303 |  | Material review & Approval of Flame Detector | 14d | 2015-01-25 | 2015-02-09 | P-MEP-P-4293 SS+10d, P-MEP-P-4293 FF+10d | 173d | 0d |  | Material Approval [40 h] |
| P-MEP-P-4313 |  | P.O of Flame Detector | 2d | 2015-02-11 | 2015-02-12 | P-MEP-P-4303 | 173d | 0d |  | Purchase Order [20 h] |
| P-MEP-P-4323 |  | Lead Time & Delivery of Flame Detector | 120d | 2015-02-13 | 2015-06-12 | P-MEP-P-4313 | 205d | 52d | * JWM - 7 Days per week with no holidays | Lead Time & Delivery [600 h] |
|  | 5 | **bell; vibrating / strobe** |  | 2015-01-29 | 2015-06-29 |  |  |  |  |  |
| P-MEP-P-4333 |  | Material Submittals of Bell, Vibrating / Strobe | 14d | 2015-01-29 | 2015-02-15 | PQ-CS-C-492, P-MEP-P-4293 | 159d | 0d |  | Material Submittals [60 h] |
| P-MEP-P-4343 |  | Material review & Approval of Bell, Vibrating / Strobe | 14d | 2015-02-11 | 2015-02-26 | P-MEP-P-4333 SS+10d, P-MEP-P-4333 FF+10d | 159d | 0d |  | Material Approval [40 h] |
| P-MEP-P-4353 |  | P.O of Bell, Vibrating / Strobe | 2d | 2015-02-28 | 2015-03-01 | P-MEP-P-4343 | 159d | 0d |  | Purchase Order [20 h] |
| P-MEP-P-4363 |  | Lead Time & Delivery of Bell, Vibrating / Strobe | 120d | 2015-03-02 | 2015-06-29 | P-MEP-P-4353 | 188d | 35d | * JWM - 7 Days per week with no holidays | Lead Time & Delivery [600 h] |
|  | 6 | **Controls panels/ work stations** |  | 2015-02-16 | 2015-07-15 |  |  |  |  |  |
| P-MEP-P-4373 |  | Material Submittals of Control Panels / Work Station | 14d | 2015-02-16 | 2015-03-03 | PQ-CS-C-492, P-MEP-P-4333 | 197d | 0d |  | Material Submittals [60 h] |
| P-MEP-P-4383 |  | Material review & Approval of Control Panels / Work Station | 14d | 2015-02-28 | 2015-03-15 | P-MEP-P-4373 SS+10d, P-MEP-P-4373 FF+10d | 197d | 0d |  | Material Approval [40 h] |
| P-MEP-P-4393 |  | P.O of Control Panels / Work Station | 2d | 2015-03-16 | 2015-03-17 | P-MEP-P-4383 | 197d | 0d |  | Purchase Order [20 h] |
| P-MEP-P-4403 |  | Lead Time & Delivery of Control Panels / Work Station | 120d | 2015-03-18 | 2015-07-15 | P-MEP-P-4393 | 236d | 48d | * JWM - 7 Days per week with no holidays | Lead Time & Delivery [600 h] |
|  | 2 | **Music System & Public Address System** |  | 2014-11-24 | 2015-04-23 |  |  |  |  |  |
|  | 1 | **Structural Cabling** |  | 2014-11-24 | 2015-04-23 |  |  |  |  |  |
| P-MEP-P-3733 |  | Material Submittals of Structural Cabling | 14d | 2014-11-24 | 2014-12-09 | PQ-CS-C-492 | 190d | 0d |  | Material Submittals [60 h] |
| P-MEP-P-3743 |  | Material review & Approval of Structural Cabling | 14d | 2014-12-06 | 2014-12-22 | P-MEP-P-3733 SS+10d, P-MEP-P-3733 FF+10d | 190d | 0d |  | Material Approval [40 h] |
| P-MEP-P-3753 |  | P.O of Structural Cabling | 2d | 2014-12-23 | 2014-12-24 | P-MEP-P-3743 | 190d | 0d |  | Purchase Order [20 h] |
| P-MEP-P-3763 |  | Lead Time & Delivery of Structural Cabling | 120d | 2014-12-25 | 2015-04-23 | P-MEP-P-3753 | 225d | 41d | * JWM - 7 Days per week with no holidays | Lead Time & Delivery [600 h] |
|  | 2 | **Speakers** |  | 2014-11-24 | 2015-04-23 |  |  |  |  |  |
| P-MEP-P-3773 |  | Material Submittals of Speaker | 14d | 2014-11-24 | 2014-12-09 | PQ-CS-C-492 | 215d | 0d |  | Material Submittals [60 h] |
| P-MEP-P-3783 |  | Material review & Approval of Speakers | 14d | 2014-12-06 | 2014-12-22 | P-MEP-P-3773 SS+10d, P-MEP-P-3773 FF+10d | 215d | 0d |  | Material Approval [40 h] |
| P-MEP-P-3793 |  | P.O of Speakers | 2d | 2014-12-23 | 2014-12-24 | P-MEP-P-3783 | 215d | 0d |  | Purchase Order [20 h] |
| P-MEP-P-3803 |  | Lead Time & Delivery of Speakers | 120d | 2014-12-25 | 2015-04-23 | P-MEP-P-3793 | 255d | 71d | * JWM - 7 Days per week with no holidays | Lead Time & Delivery [600 h] |

| ID | WBS | Activity | Duration | Start | Finish | Predecessors | Total float | Free float | Calendar | Resources |
| --- | --- | --- | --- | --- | --- | --- | --- | --- | --- | --- |
|  | 3 | **Bose Amplifier** |  | 2014-11-24 | 2015-04-23 |  |  |  |  |  |
| P-MEP-P-3813 |  | Material Submittals of Bose Amplifier | 14d | 2014-11-24 | 2014-12-09 | PQ-CS-C-492 | 215d | 0d |  | Material Submittals [60 h] |
| P-MEP-P-3823 |  | Material review & Approval of Bose Amplifier | 14d | 2014-12-06 | 2014-12-22 | P-MEP-P-3813 SS+10d, P-MEP-P-3813 FF+10d | 215d | 0d |  | Material Approval [40 h] |
| P-MEP-P-3833 |  | P.O of Bose Amplifier | 2d | 2014-12-23 | 2014-12-24 | P-MEP-P-3823 | 215d | 0d |  | Purchase Order [20 h] |
| P-MEP-P-3843 |  | Lead Time & Delivery of Bose Amplifier | 120d | 2014-12-25 | 2015-04-23 | P-MEP-P-3833 | 255d | 71d | * JWM - 7 Days per week with no holidays | Lead Time & Delivery [600 h] |
|  | 4 | **Media Hub** |  | 2014-11-24 | 2015-04-23 |  |  |  |  |  |
| P-MEP-P-3853 |  | Material Submittals of Media Hub | 14d | 2014-11-24 | 2014-12-09 | PQ-CS-C-492 | 215d | 0d |  | Material Submittals [60 h] |
| P-MEP-P-3863 |  | Material review & Approval of Media Hub | 14d | 2014-12-06 | 2014-12-22 | P-MEP-P-3853 SS+10d, P-MEP-P-3853 FF+10d | 215d | 0d |  | Material Approval [40 h] |
| P-MEP-P-3873 |  | P.O of Media Hub | 2d | 2014-12-23 | 2014-12-24 | P-MEP-P-3863 | 215d | 0d |  | Purchase Order [20 h] |
| P-MEP-P-3883 |  | Lead Time & Delivery of Media Hub | 120d | 2014-12-25 | 2015-04-23 | P-MEP-P-3873 | 255d | 71d | * JWM - 7 Days per week with no holidays | Lead Time & Delivery [600 h] |
|  | 5 | **Digital signal processor** |  | 2014-11-24 | 2015-04-23 |  |  |  |  |  |
| P-MEP-P-3893 |  | Material Submittals of Digital Signal Processor | 14d | 2014-11-24 | 2014-12-09 | PQ-CS-C-492 | 287d | 0d |  | Material Submittals [60 h] |
| P-MEP-P-3903 |  | Material review & Approval of Digital Signal Processor | 14d | 2014-12-06 | 2014-12-22 | P-MEP-P-3893 SS+10d, P-MEP-P-3893 FF+10d | 287d | 0d |  | Material Approval [40 h] |
| P-MEP-P-3913 |  | P.O of Digital Signal Processor | 2d | 2014-12-23 | 2014-12-24 | P-MEP-P-3903 | 287d | 0d |  | Purchase Order [20 h] |
| P-MEP-P-3923 |  | Lead Time & Delivery of Digital Signal Processor | 120d | 2014-12-25 | 2015-04-23 | P-MEP-P-3913 | 342d | 102d | * JWM - 7 Days per week with no holidays | Lead Time & Delivery [600 h] |
|  | 6 | **Control center Rack & Boards** |  | 2014-11-24 | 2015-04-23 |  |  |  |  |  |
| P-MEP-P-3933 |  | Material Submittals of Control Center Racks & Boards | 14d | 2014-11-24 | 2014-12-09 | PQ-CS-C-492 | 215d | 0d |  | Material Submittals [60 h] |
| P-MEP-P-3943 |  | Material review & Approval of Control Center Racks & Boards | 14d | 2014-12-06 | 2014-12-22 | P-MEP-P-3933 SS+10d, P-MEP-P-3933 FF+10d | 215d | 0d |  | Material Approval [40 h] |
| P-MEP-P-3953 |  | P.O of Control Center Racks & Boards | 2d | 2014-12-23 | 2014-12-24 | P-MEP-P-3943 | 215d | 0d |  | Purchase Order [20 h] |
| P-MEP-P-3963 |  | Lead Time & Delivery of Control Center Racks & Boards | 120d | 2014-12-25 | 2015-04-23 | P-MEP-P-3953 | 255d | 71d | * JWM - 7 Days per week with no holidays | Lead Time & Delivery [600 h] |
|  | 7 | **zone controller** |  | 2014-11-24 | 2015-04-23 |  |  |  |  |  |
| P-MEP-P-3973 |  | Material Submittals of Zone Controller | 14d | 2014-11-24 | 2014-12-09 | PQ-CS-C-492 | 215d | 0d |  | Material Submittals [60 h] |
| P-MEP-P-3983 |  | Material review & Approval of Zone Controller | 14d | 2014-12-06 | 2014-12-22 | P-MEP-P-3973 SS+10d, P-MEP-P-3973 FF+10d | 215d | 0d |  | Material Approval [40 h] |
| P-MEP-P-3993 |  | P.O of Zone Controller | 2d | 2014-12-23 | 2014-12-24 | P-MEP-P-3983 | 215d | 0d |  | Purchase Order [20 h] |
| P-MEP-P-4003 |  | Lead Time & Delivery of Zone Controller | 120d | 2014-12-25 | 2015-04-23 | P-MEP-P-3993 | 255d | 71d | * JWM - 7 Days per week with no holidays | Lead Time & Delivery [600 h] |

| ID | WBS | Activity | Duration | Start | Finish | Predecessors | Total float | Free float | Calendar | Resources |
| --- | --- | --- | --- | --- | --- | --- | --- | --- | --- | --- |
|  | 8 | **music sever** |  | 2014-11-24 | 2015-04-23 |  |  |  |  |  |
| P-MEP-P-4013 |  | Material Submittals of music server | 14d | 2014-11-24 | 2014-12-09 | PQ-CS-C-492 | 287d | 0d |  | Material Submittals [60 h] |
| P-MEP-P-4023 |  | Material review & Approval of music server | 14d | 2014-12-06 | 2014-12-22 | P-MEP-P-4013 SS+10d, P-MEP-P-4013 FF+10d | 287d | 0d |  | Material Approval [40 h] |
| P-MEP-P-4033 |  | P.O of music server | 2d | 2014-12-23 | 2014-12-24 | P-MEP-P-4023 | 287d | 0d |  | Purchase Order [20 h] |
| P-MEP-P-4043 |  | Lead Time & Delivery of music server | 120d | 2014-12-25 | 2015-04-23 | P-MEP-P-4033 | 342d | 102d | * JWM - 7 Days per week with no holidays | Lead Time & Delivery [600 h] |
|  | 9 | **5 CD changer** |  | 2014-11-24 | 2015-04-23 |  |  |  |  |  |
| P-MEP-P-4053 |  | Material Submittals of 5 CD changer | 14d | 2014-11-24 | 2014-12-09 | PQ-CS-C-492 | 287d | 0d |  | Material Submittals [60 h] |
| P-MEP-P-4063 |  | Material review & Approval of 5 CD changer | 14d | 2014-12-06 | 2014-12-22 | P-MEP-P-4053 SS+10d, P-MEP-P-4053 FF+10d | 287d | 0d |  | Material Approval [40 h] |
| P-MEP-P-4073 |  | P.O of 5 CD changer | 2d | 2014-12-23 | 2014-12-24 | P-MEP-P-4063 | 287d | 0d |  | Purchase Order [20 h] |
| P-MEP-P-4083 |  | Lead Time & Delivery of 5 CD changer | 120d | 2014-12-25 | 2015-04-23 | P-MEP-P-4073 | 342d | 102d | * JWM - 7 Days per week with no holidays | Lead Time & Delivery [600 h] |
|  | 10 | **AM/FM tuner** |  | 2014-11-24 | 2015-04-23 |  |  |  |  |  |
| P-MEP-P-4093 |  | Material Submittals of AM/FM tuner | 14d | 2014-11-24 | 2014-12-09 | PQ-CS-C-492 | 287d | 0d |  | Material Submittals [60 h] |
| P-MEP-P-4103 |  | Material review & Approval of AM/FM tuner | 14d | 2014-12-06 | 2014-12-22 | P-MEP-P-4093 SS+10d, P-MEP-P-4093 FF+10d | 287d | 0d |  | Material Approval [40 h] |
| P-MEP-P-4113 |  | P.O of AM/FM tuner | 2d | 2014-12-23 | 2014-12-24 | P-MEP-P-4103 | 287d | 0d |  | Purchase Order [20 h] |
| P-MEP-P-4123 |  | Lead Time & Delivery of AM/FM tuner | 120d | 2014-12-25 | 2015-04-23 | P-MEP-P-4113 | 342d | 102d | * JWM - 7 Days per week with no holidays | Lead Time & Delivery [600 h] |
|  | 11 | **IPOD dock** |  | 2014-11-24 | 2015-04-23 |  |  |  |  |  |
| P-MEP-P-4133 |  | Material Submittals of IPOD dock | 14d | 2014-11-24 | 2014-12-09 | PQ-CS-C-492 | 287d | 0d |  | Material Submittals [60 h] |
| P-MEP-P-4143 |  | Material review & Approval of IPOD dock | 14d | 2014-12-06 | 2014-12-22 | P-MEP-P-4133 SS+10d, P-MEP-P-4133 FF+10d | 287d | 0d |  | Material Approval [40 h] |
| P-MEP-P-4153 |  | P.O of IPOD dock | 2d | 2014-12-23 | 2014-12-24 | P-MEP-P-4143 | 287d | 0d |  | Purchase Order [20 h] |
| P-MEP-P-4163 |  | Lead Time & Delivery of IPOD dock | 120d | 2014-12-25 | 2015-04-23 | P-MEP-P-4153 | 342d | 102d | * JWM - 7 Days per week with no holidays | Lead Time & Delivery [600 h] |
|  | 3 | **IP CCTV & Access Control System** |  | 2014-11-24 | 2015-04-23 |  |  |  |  |  |
|  | 1 | **Structure Cabling** |  | 2014-11-24 | 2015-04-23 |  |  |  |  |  |
| P-MEP-P-4413 |  | Material Submittals of IP CCTV - Structural Cabling | 14d | 2014-11-24 | 2014-12-09 | PQ-CS-C-492 | 202d | 0d |  | Material Submittals [60 h] |
| P-MEP-P-4423 |  | Material review & Approval of IP CCTV - Structural Cabling | 14d | 2014-12-06 | 2014-12-22 | P-MEP-P-4413 SS+10d, P-MEP-P-4413 FF+10d | 202d | 0d |  | Material Approval [40 h] |
| P-MEP-P-4433 |  | P.O of IP CCTV - Structural Cabling | 2d | 2014-12-23 | 2014-12-24 | P-MEP-P-4423 | 202d | 0d |  | Purchase Order [20 h] |
| P-MEP-P-4443 |  | Lead Time & Delivery of IP CCTV - Structural Cabling | 120d | 2014-12-25 | 2015-04-23 | P-MEP-P-4433 | 240d | 96d | * JWM - 7 Days per week with no holidays | Lead Time & Delivery [600 h] |

| ID | WBS | Activity | Duration | Start | Finish | Predecessors | Total float | Free float | Calendar | Resources |
| --- | --- | --- | --- | --- | --- | --- | --- | --- | --- | --- |
|  | 2 | **Camera's** |  | 2014-11-24 | 2015-04-23 |  |  |  |  |  |
| P-MEP-P-4453 |  | Material Submittals of Camera's | 14d | 2014-11-24 | 2014-12-09 | PQ-CS-C-492 | 222d | 0d |  | Material Submittals [60 h] |
| P-MEP-P-4463 |  | Material review & Approval of Camera's | 14d | 2014-12-06 | 2014-12-22 | P-MEP-P-4453 SS+10d, P-MEP-P-4453 FF+10d | 222d | 0d |  | Material Approval [40 h] |
| P-MEP-P-4473 |  | P.O of Camera's | 2d | 2014-12-23 | 2014-12-24 | P-MEP-P-4463 | 222d | 0d |  | Purchase Order [20 h] |
| P-MEP-P-4483 |  | Lead Time & Delivery of Camera's | 120d | 2014-12-25 | 2015-04-23 | P-MEP-P-4473 | 263d | 120d | * JWM - 7 Days per week with no holidays | Lead Time & Delivery [600 h] |
|  | 3 | **Electronic Locks** |  | 2014-11-24 | 2015-04-23 |  |  |  |  |  |
| P-MEP-P-4493 |  | Material Submittals of Electronic Lock | 14d | 2014-11-24 | 2014-12-09 | PQ-CS-C-492 | 220d | 0d |  | Material Submittals [60 h] |
| P-MEP-P-4503 |  | Material review & Approval of Electronic Lock | 14d | 2014-12-06 | 2014-12-22 | P-MEP-P-4493 SS+10d, P-MEP-P-4493 FF+10d | 220d | 0d |  | Material Approval [40 h] |
| P-MEP-P-4513 |  | P.O of Electronic Lock | 2d | 2014-12-23 | 2014-12-24 | P-MEP-P-4503 | 220d | 0d |  | Purchase Order [20 h] |
| P-MEP-P-4523 |  | Lead Time & Delivery of Electronic Lock | 120d | 2014-12-25 | 2015-04-23 | P-MEP-P-4513 | 260d | 111d | * JWM - 7 Days per week with no holidays | Lead Time & Delivery [600 h] |
|  | 4 | **Alarms** |  | 2014-11-24 | 2015-04-23 |  |  |  |  |  |
| P-MEP-P-4533 |  | Material Submittals of Alarm | 14d | 2014-11-24 | 2014-12-09 | PQ-CS-C-492 | 222d | 0d |  | Material Submittals [60 h] |
| P-MEP-P-4543 |  | Material review & Approval of Alarm | 14d | 2014-12-06 | 2014-12-22 | P-MEP-P-4533 SS+10d, P-MEP-P-4533 FF+10d | 222d | 0d |  | Material Approval [40 h] |
| P-MEP-P-4553 |  | P.O of Alarm | 2d | 2014-12-23 | 2014-12-24 | P-MEP-P-4543 | 222d | 0d |  | Purchase Order [20 h] |
| P-MEP-P-4563 |  | Lead Time & Delivery of Alarm | 120d | 2014-12-25 | 2015-04-23 | P-MEP-P-4553 | 263d | 120d | * JWM - 7 Days per week with no holidays | Lead Time & Delivery [600 h] |
|  | 5 | **IP based controller** |  | 2014-11-24 | 2015-04-23 |  |  |  |  |  |
| P-MEP-P-4573 |  | Material Submittals of IP Based Controller | 14d | 2014-11-24 | 2014-12-09 | PQ-CS-C-492 | 222d | 0d |  | Material Submittals [60 h] |
| P-MEP-P-4583 |  | Material review & Approval of IP Based Controller | 14d | 2014-12-06 | 2014-12-22 | P-MEP-P-4573 SS+10d, P-MEP-P-4573 FF+10d | 222d | 0d |  | Material Approval [40 h] |
| P-MEP-P-4593 |  | P.O of IP Based Controller | 2d | 2014-12-23 | 2014-12-24 | P-MEP-P-4583 | 222d | 0d |  | Purchase Order [20 h] |
| P-MEP-P-4603 |  | Lead Time & Delivery of IP Based Controller | 120d | 2014-12-25 | 2015-04-23 | P-MEP-P-4593 | 263d | 120d | * JWM - 7 Days per week with no holidays | Lead Time & Delivery [600 h] |
|  | 6 | **Operator workstation for CCTV & ACS** |  | 2014-11-24 | 2015-04-23 |  |  |  |  |  |
| P-MEP-P-4613 |  | Material Submittals of Operator Workstation - CCTV & ACS | 14d | 2014-11-24 | 2014-12-09 | PQ-CS-C-492 | 222d | 0d |  | Material Submittals [60 h] |
| P-MEP-P-4623 |  | Material review & Approval of Operator Workstation - CCTV & ACS | 14d | 2014-12-06 | 2014-12-22 | P-MEP-P-4613 SS+10d, P-MEP-P-4613 FF+10d | 222d | 0d |  | Material Approval [40 h] |
| P-MEP-P-4633 |  | P.O of Operator Workstation - CCTV & ACS | 2d | 2014-12-23 | 2014-12-24 | P-MEP-P-4623 | 222d | 0d |  | Purchase Order [20 h] |
| P-MEP-P-4643 |  | Lead Time & Delivery of Operator Workstation - CCTV & ACS | 120d | 2014-12-25 | 2015-04-23 | P-MEP-P-4633 | 263d | 120d | * JWM - 7 Days per week with no holidays | Lead Time & Delivery [600 h] |

| ID | WBS | Activity | Duration | Start | Finish | Predecessors | Total float | Free float | Calendar | Resources |
| --- | --- | --- | --- | --- | --- | --- | --- | --- | --- | --- |
|  | 7 | **CCTV server** |  | 2014-11-24 | 2015-04-23 |  |  |  |  |  |
| P-MEP-P-4653 |  | Material Submittals of CCTV Server | 14d | 2014-11-24 | 2014-12-09 | PQ-CS-C-492 | 220d | 0d |  | Material Submittals [60 h] |
| P-MEP-P-4663 |  | Material review & Approval of CCTV Server | 14d | 2014-12-06 | 2014-12-22 | P-MEP-P-4653 SS+10d, P-MEP-P-4653 FF+10d | 220d | 0d |  | Material Approval [40 h] |
| P-MEP-P-4673 |  | P.O of CCTV Server | 2d | 2014-12-23 | 2014-12-24 | P-MEP-P-4663 | 220d | 0d |  | Purchase Order [20 h] |
| P-MEP-P-4683 |  | Lead Time & Delivery of CCTV Server | 120d | 2014-12-25 | 2015-04-23 | P-MEP-P-4673 | 260d | 111d | * JWM - 7 Days per week with no holidays | Lead Time & Delivery [600 h] |
|  | 7 | **Communication System** |  | 2014-11-24 | 2015-09-18 |  |  |  |  |  |
|  | 2 | **Cable Trays & Truncking** |  | 2014-11-24 | 2015-04-23 |  |  |  |  |  |
| P-MEP-P-2973 |  | Material Submittals of Cables Trays & Truncking | 14d | 2014-11-24 | 2014-12-09 | PQ-CS-C-492 | 106d | 0d |  | Material Submittals [60 h] |
| P-MEP-P-2983 |  | Material review & Approval of Cables Trays & Truncking | 14d | 2014-12-06 | 2014-12-22 | P-MEP-P-2973 SS+10d, P-MEP-P-2973 FF+10d | 108d | 0d |  | Material Approval [40 h] |
| P-MEP-P-2993 |  | P.O of Cables Trays & Truncking | 2d | 2014-12-23 | 2014-12-24 | P-MEP-P-2983 | 108d | 0d |  | Purchase Order [20 h] |
| P-MEP-P-3003 |  | Lead Time & Delivery of Cables Trays & Truncking | 120d | 2014-12-25 | 2015-04-23 | P-MEP-P-2993 | 127d | 1d | * JWM - 7 Days per week with no holidays | Lead Time & Delivery [600 h] |
|  | 1 | **CAT6 Cabling** |  | 2014-12-10 | 2015-05-10 |  |  |  |  |  |
| P-MEP-P-3013 |  | Material Submittals of CAT6 Cabling | 14d | 2014-12-10 | 2014-12-27 | PQ-CS-C-492, P-MEP-P-2973 | 106d | 0d |  | Material Submittals [60 h] |
| P-MEP-P-3023 |  | Material review & Approval of CAT6 Cabling | 14d | 2014-12-23 | 2015-01-07 | P-MEP-P-3013 SS+10d, P-MEP-P-3013 FF+10d | 112d | 0d |  | Material Approval [40 h] |
| P-MEP-P-3033 |  | P.O of CAT6 Cabling | 2d | 2015-01-08 | 2015-01-10 | P-MEP-P-3023 | 112d | 0d |  | Purchase Order [20 h] |
| P-MEP-P-3043 |  | Lead Time & Delivery of CAT6 Cabling | 120d | 2015-01-11 | 2015-05-10 | P-MEP-P-3033 | 131d | 5d | * JWM - 7 Days per week with no holidays | Lead Time & Delivery [600 h] |
|  | 3 | **Fiber Optic Cabling** |  | 2014-12-28 | 2015-05-26 |  |  |  |  |  |
| P-MEP-P-3053 |  | Material Submittals of Fiber Optic Cabling | 14d | 2014-12-28 | 2015-01-12 | PQ-CS-C-492, P-MEP-P-3013 | 106d | 0d |  | Material Submittals [60 h] |
| P-MEP-P-3063 |  | Material review & Approval of Fiber Optic Cabling | 14d | 2015-01-08 | 2015-01-24 | P-MEP-P-3053 SS+10d, P-MEP-P-3053 FF+10d | 187d | 0d |  | Material Approval [40 h] |
| P-MEP-P-3073 |  | P.O of Fiber Optic Cabling | 2d | 2015-01-25 | 2015-01-26 | P-MEP-P-3063 | 187d | 0d |  | Purchase Order [20 h] |
| P-MEP-P-3083 |  | Lead Time & Delivery of Fiber Optic Cabling | 120d | 2015-01-27 | 2015-05-26 | P-MEP-P-3073 | 222d | 96d | * JWM - 7 Days per week with no holidays | Lead Time & Delivery [600 h] |
|  | 8 | **wireless access point** |  | 2015-01-13 | 2015-07-22 |  |  |  |  |  |
| P-MEP-P-3093 |  | Material Submittals of Wireless Access Point | 14d | 2015-01-13 | 2015-01-28 | PQ-CS-C-492, P-MEP-P-3053 | 106d | 0d |  | Material Submittals [60 h] |
| P-MEP-P-3103 |  | Material review & Approval of Wireless Access Point | 14d | 2015-01-25 | 2015-02-09 | P-MEP-P-3093 SS+10d, P-MEP-P-3093 FF+10d | 139d | 0d |  | Material Approval [40 h] |
| P-MEP-P-3113 |  | P.O of Wireless Access Point | 2d | 2015-02-11 | 2015-02-12 | P-MEP-P-3103 | 139d | 0d |  | Purchase Order [20 h] |
| P-MEP-P-3123 |  | Lead Time & Delivery of Wireless Access Point | 160d | 2015-02-13 | 2015-07-22 | P-MEP-P-3113 | 165d | 39d | * JWM - 7 Days per week with no holidays | Lead Time & Delivery [600 h] |

| ID | WBS | Activity | Duration | Start | Finish | Predecessors | Total float | Free float | Calendar | Resources |
| --- | --- | --- | --- | --- | --- | --- | --- | --- | --- | --- |
|  | 9 | **IP DECT phone** |  | 2015-01-29 | 2015-06-29 |  |  |  |  |  |
| P-MEP-P-3133 |  | Material Submittals of IP Dect Phone | 14d | 2015-01-29 | 2015-02-15 | PQ-CS-C-492, P-MEP-P-3093 | 106d | 0d |  | Material Submittals [60 h] |
| P-MEP-P-3143 |  | Material review & Approval of IP Dect Phone | 14d | 2015-02-11 | 2015-02-26 | P-MEP-P-3133 SS+10d, P-MEP-P-3133 FF+10d | 203d | 0d |  | Material Approval [40 h] |
| P-MEP-P-3153 |  | P.O of IP Dect Phone | 2d | 2015-02-28 | 2015-03-01 | P-MEP-P-3143 | 203d | 0d |  | Purchase Order [20 h] |
| P-MEP-P-3163 |  | Lead Time & Delivery of IP Dect Phone | 120d | 2015-03-02 | 2015-06-29 | P-MEP-P-3153 | 243d | 95d | * JWM - 7 Days per week with no holidays | Lead Time & Delivery [600 h] |
|  | 10 | **IP DECT controller with antennas** |  | 2015-02-16 | 2015-07-15 |  |  |  |  |  |
| P-MEP-P-3173 |  | Material Submittals of IP Dect Controller with Antennas | 14d | 2015-02-16 | 2015-03-03 | PQ-CS-C-492, P-MEP-P-3133 | 106d | 0d |  | Material Submittals [60 h] |
| P-MEP-P-3183 |  | Material review & Approval of IP Dect Controller with Antennas | 14d | 2015-02-28 | 2015-03-15 | P-MEP-P-3173 SS+10d, P-MEP-P-3173 FF+10d | 189d | 0d |  | Material Approval [40 h] |
| P-MEP-P-3193 |  | P.O of IP Dect Controller with Antennas | 2d | 2015-03-16 | 2015-03-17 | P-MEP-P-3183 | 189d | 0d |  | Purchase Order [20 h] |
| P-MEP-P-3203 |  | Lead Time & Delivery of IP Dect Controller with Antennas | 120d | 2015-03-18 | 2015-07-15 | P-MEP-P-3193 | 227d | 79d | * JWM - 7 Days per week with no holidays | Lead Time & Delivery [600 h] |
|  | 7 | **RJ45 Sockets** |  | 2015-03-04 | 2015-08-30 |  |  |  |  |  |
| P-MEP-P-3213 |  | Material Submittals of RJ45 Socket | 14d | 2015-03-04 | 2015-03-19 | PQ-CS-C-492, P-MEP-P-3173 | 106d | 0d |  | Material Submittals [60 h] |
| P-MEP-P-3223 |  | Material review & Approval of RJ45 Socket | 14d | 2015-03-16 | 2015-03-31 | P-MEP-P-3213 SS+10d, P-MEP-P-3213 FF+10d | 106d | 0d |  | Material Approval [40 h] |
| P-MEP-P-3233 |  | P.O of RJ45 Socket | 2d | 2015-04-01 | 2015-04-02 | P-MEP-P-3223 | 106d | 0d |  | Purchase Order [20 h] |
| P-MEP-P-3243 |  | Lead Time & Delivery of RJ45 Socket | 150d | 2015-04-03 | 2015-08-30 | P-MEP-P-3233 | 126d | 0d | * JWM - 7 Days per week with no holidays | Lead Time & Delivery [600 h] |
|  | 4 | **IDF/MDF Switches** |  | 2015-03-21 | 2015-08-17 |  |  |  |  |  |
| P-MEP-P-3253 |  | Material Submittals of IDF/MDF Swiches | 14d | 2015-03-21 | 2015-04-05 | PQ-CS-C-492, P-MEP-P-3213 | 133d | 0d |  | Material Submittals [60 h] |
| P-MEP-P-3263 |  | Material review & Approval of IDF/MDF Swiches | 14d | 2015-04-01 | 2015-04-16 | P-MEP-P-3253 SS+10d, P-MEP-P-3253 FF+10d | 161d | 0d |  | Material Approval [40 h] |
| P-MEP-P-3273 |  | P.O of IDF/MDF Swiches | 2d | 2015-04-18 | 2015-04-19 | P-MEP-P-3263 | 161d | 0d |  | Purchase Order [20 h] |
| P-MEP-P-3283 |  | Lead Time & Delivery of IDF/MDF Swiches | 120d | 2015-04-20 | 2015-08-17 | P-MEP-P-3273 | 194d | 46d | * JWM - 7 Days per week with no holidays | Lead Time & Delivery [600 h] |
|  | 5 | **Racks & Cabinets** |  | 2015-04-06 | 2015-09-02 |  |  |  |  |  |
| P-MEP-P-3293 |  | Material Submittals of Racks & Cabinets | 14d | 2015-04-06 | 2015-04-21 | PQ-CS-C-492, P-MEP-P-3253 | 133d | 0d |  | Material Submittals [60 h] |
| P-MEP-P-3303 |  | Material review & Approval of Racks & Cabinets | 14d | 2015-04-18 | 2015-05-03 | P-MEP-P-3293 SS+10d, P-MEP-P-3293 FF+10d | 147d | 0d |  | Material Approval [40 h] |
| P-MEP-P-3313 |  | P.O of Racks & Cabinets | 2d | 2015-05-04 | 2015-05-05 | P-MEP-P-3303 | 147d | 0d |  | Purchase Order [20 h] |
| P-MEP-P-3323 |  | Lead Time & Delivery of Racks & Cabinets | 120d | 2015-05-06 | 2015-09-02 | P-MEP-P-3313 | 178d | 30d | * JWM - 7 Days per week with no holidays | Lead Time & Delivery [600 h] |

| ID | WBS | Activity | Duration | Start | Finish | Predecessors | Total float | Free float | Calendar | Resources |
| --- | --- | --- | --- | --- | --- | --- | --- | --- | --- | --- |
|  | 6 | **Telephone Distribution Panel & Boxes** |  | 2015-04-22 | 2015-09-18 |  |  |  |  |  |
| P-MEP-P-3333 |  | Material Submittals of Telephone Distribution Panel & Boxes | 14d | 2015-04-22 | 2015-05-07 | PQ-CS-C-492, P-MEP-P-3293 | 133d | 0d |  | Material Submittals [60 h] |
| P-MEP-P-3343 |  | Material review & Approval of Telephone Distribution Panel & Boxes | 14d | 2015-05-04 | 2015-05-19 | P-MEP-P-3333 SS+10d, P-MEP-P-3333 FF+10d | 133d | 0d |  | Material Approval [40 h] |
| P-MEP-P-3353 |  | P.O of Telephone Distribution Panel & Boxes | 2d | 2015-05-20 | 2015-05-21 | P-MEP-P-3343 | 133d | 0d |  | Purchase Order [20 h] |
| P-MEP-P-3363 |  | Lead Time & Delivery of Telephone Distribution Panel & Boxes | 120d | 2015-05-22 | 2015-09-18 | P-MEP-P-3353 | 162d | 14d | * JWM - 7 Days per week with no holidays | Lead Time & Delivery [600 h] |
|  | 4 | **IP, SMATV & QAM Television System** |  | 2014-11-24 | 2015-04-23 |  |  |  |  |  |
|  | 1 | **Cables & Accessories** |  | 2014-11-24 | 2015-04-23 |  |  |  |  |  |
| P-MEP-P-4693 |  | Material Submittals of IP SMATV - Cables & Accessories | 14d | 2014-11-24 | 2014-12-09 | PQ-CS-C-492 | 178d | 0d |  | Material Submittals [60 h] |
| P-MEP-P-4703 |  | Material review & Approval of IP SMATV - Cables & Accessories | 14d | 2014-12-06 | 2014-12-22 | P-MEP-P-4693 SS+10d, P-MEP-P-4693 FF+10d | 178d | 0d |  | Material Approval [40 h] |
| P-MEP-P-4713 |  | P.O of IP SMATV - Cables & Accessories | 2d | 2014-12-23 | 2014-12-24 | P-MEP-P-4703 | 178d | 0d |  | Purchase Order [20 h] |
| P-MEP-P-4723 |  | Lead Time & Delivery of IP SMATV - Cables & Accessories | 120d | 2014-12-25 | 2015-04-23 | P-MEP-P-4713 | 212d | 71d | * JWM - 7 Days per week with no holidays | Lead Time & Delivery [600 h] |
|  | 2 | **IP, SMATV & QAM TV outet** |  | 2014-11-24 | 2015-04-23 |  |  |  |  |  |
| P-MEP-P-4733 |  | Material Submittals of TV Outlet | 14d | 2014-11-24 | 2014-12-09 | PQ-CS-C-492 | 222d | 0d |  | Material Submittals [60 h] |
| P-MEP-P-4743 |  | Material review & Approval of TV Outlet | 14d | 2014-12-06 | 2014-12-22 | P-MEP-P-4733 SS+10d, P-MEP-P-4733 FF+10d | 222d | 0d |  | Material Approval [40 h] |
| P-MEP-P-4753 |  | P.O of TV Outlet | 2d | 2014-12-23 | 2014-12-24 | P-MEP-P-4743 | 222d | 0d |  | Purchase Order [20 h] |
| P-MEP-P-4763 |  | Lead Time & Delivery of TV Outlet | 120d | 2014-12-25 | 2015-04-23 | P-MEP-P-4753 | 263d | 121d | * JWM - 7 Days per week with no holidays | Lead Time & Delivery [600 h] |
|  | 3 | **SMATV & QAM fiber receiver** |  | 2014-11-24 | 2015-04-23 |  |  |  |  |  |
| P-MEP-P-4773 |  | Material Submittals of SMATV & QAM Fiber receiver | 14d | 2014-11-24 | 2014-12-09 | PQ-CS-C-492 | 287d | 0d |  | Material Submittals [60 h] |
| P-MEP-P-4783 |  | Material review & Approval of SMATV & QAM Fiber receiver | 14d | 2014-12-06 | 2014-12-22 | P-MEP-P-4773 SS+10d, P-MEP-P-4773 FF+10d | 287d | 0d |  | Material Approval [40 h] |
| P-MEP-P-4793 |  | P.O of SMATV & QAM Fiber receiver | 2d | 2014-12-23 | 2014-12-24 | P-MEP-P-4783 | 287d | 0d |  | Purchase Order [20 h] |
| P-MEP-P-4803 |  | Lead Time & Delivery of SMATV & QAM Fiber receiver | 120d | 2014-12-25 | 2015-04-23 | P-MEP-P-4793 | 342d | 142d | * JWM - 7 Days per week with no holidays | Lead Time & Delivery [600 h] |
|  | 4 | **Switches & Splitter** |  | 2014-11-24 | 2015-04-23 |  |  |  |  |  |
| P-MEP-P-4813 |  | Material Submittals of Switches & Splitter | 14d | 2014-11-24 | 2014-12-09 | PQ-CS-C-492 | 222d | 0d |  | Material Submittals [60 h] |
| P-MEP-P-4823 |  | Material review & Approval of Switches & Splitter | 14d | 2014-12-06 | 2014-12-22 | P-MEP-P-4813 SS+10d, P-MEP-P-4813 FF+10d | 222d | 0d |  | Material Approval [40 h] |
| P-MEP-P-4833 |  | P.O of Switches & Splitter | 2d | 2014-12-23 | 2014-12-24 | P-MEP-P-4823 | 222d | 0d |  | Purchase Order [20 h] |
| P-MEP-P-4843 |  | Lead Time & Delivery of Switches & Splitter | 120d | 2014-12-25 | 2015-04-23 | P-MEP-P-4833 | 263d | 121d | * JWM - 7 Days per week with no holidays | Lead Time & Delivery [600 h] |

| ID | WBS | Activity | Duration | Start | Finish | Predecessors | Total float | Free float | Calendar | Resources |
| --- | --- | --- | --- | --- | --- | --- | --- | --- | --- | --- |
|  | 6 | **BMS system** |  | 2014-12-30 | 2015-08-03 |  |  |  |  |  |
|  | 1 | **Cabling & Truncking** |  | 2014-12-30 | 2015-05-28 |  |  |  |  |  |
| P-MEP-P-4853 |  | Material Submittals of BMS - Cabling & Truncking | 14d | 2014-12-30 | 2015-01-14 | PQ-CS-C-512 | 174d | 0d |  | Material Submittals [60 h] |
| P-MEP-P-4863 |  | Material review & Approval of BMS - Cabling & Truncking | 14d | 2015-01-11 | 2015-01-26 | P-MEP-P-4853 SS+10d, P-MEP-P-4853 FF+10d | 174d | 0d |  | Material Approval [40 h] |
| P-MEP-P-4873 |  | P.O of BMS - Cabling & Truncking | 2d | 2015-01-27 | 2015-01-28 | P-MEP-P-4863 | 174d | 0d |  | Purchase Order [20 h] |
| P-MEP-P-4883 |  | Lead Time & Delivery of BMS - Cabling & Truncking | 120d | 2015-01-29 | 2015-05-28 | P-MEP-P-4873 | 207d | 67d | * JWM - 7 Days per week with no holidays | Lead Time & Delivery [600 h] |
|  | 2 | **Sensors, Relays & Valves** |  | 2015-01-15 | 2015-06-15 |  |  |  |  |  |
| P-MEP-P-4893 |  | Material Submittals of BMS - Sensors, Relays & Valves | 14d | 2015-01-15 | 2015-01-31 | PQ-CS-C-512, P-MEP-P-4853 | 176d | 0d |  | Material Submittals [60 h] |
| P-MEP-P-4903 |  | Material review & Approval of BMS - Sensors, Relays & Valves | 14d | 2015-01-27 | 2015-02-12 | P-MEP-P-4893 SS+10d, P-MEP-P-4893 FF+10d | 176d | 0d |  | Material Approval [40 h] |
| P-MEP-P-4913 |  | P.O of BMS - Sensors, Relays & Valves | 2d | 2015-02-14 | 2015-02-15 | P-MEP-P-4903 | 176d | 0d |  | Purchase Order [20 h] |
| P-MEP-P-4923 |  | Lead Time & Delivery of BMS - Sensors, Relays & Valves | 120d | 2015-02-16 | 2015-06-15 | P-MEP-P-4913 | 208d | 99d | * JWM - 7 Days per week with no holidays | Lead Time & Delivery [600 h] |
|  | 3 | **Computer Server, Monitoring & COntroling Equipements** |  | 2015-02-01 | 2015-07-01 |  |  |  |  |  |
| P-MEP-P-4933 |  | Material Submittals of BMS - Computer Server | 14d | 2015-02-01 | 2015-02-17 | PQ-CS-C-512, P-MEP-P-4893 | 250d | 0d |  | Material Submittals [60 h] |
| P-MEP-P-4943 |  | Material review & Approval of BMS - Computer Server | 14d | 2015-02-14 | 2015-03-01 | P-MEP-P-4933 SS+10d, P-MEP-P-4933 FF+10d | 278d | 0d |  | Material Approval [40 h] |
| P-MEP-P-4953 |  | P.O of BMS - Computer Server | 2d | 2015-03-02 | 2015-03-03 | P-MEP-P-4943 | 278d | 0d |  | Purchase Order [20 h] |
| P-MEP-P-4963 |  | Lead Time & Delivery of BMS - Computer Server | 120d | 2015-03-04 | 2015-07-01 | P-MEP-P-4953 | 332d | 107d | * JWM - 7 Days per week with no holidays | Lead Time & Delivery [600 h] |
|  | 4 | **Racks & Panels** |  | 2015-02-18 | 2015-07-17 |  |  |  |  |  |
| P-MEP-P-4973 |  | Material Submittals of Racks & Panels | 14d | 2015-02-18 | 2015-03-05 | PQ-CS-C-512, P-MEP-P-4933 | 250d | 0d |  | Material Submittals [60 h] |
| P-MEP-P-4983 |  | Material review & Approval of Racks & Panels | 14d | 2015-03-02 | 2015-03-17 | P-MEP-P-4973 SS+10d, P-MEP-P-4973 FF+10d | 264d | 0d |  | Material Approval [40 h] |
| P-MEP-P-4993 |  | P.O of Racks & Panels | 2d | 2015-03-18 | 2015-03-19 | P-MEP-P-4983 | 264d | 0d |  | Purchase Order [20 h] |
| P-MEP-P-5003 |  | Lead Time & Delivery of Racks & Panels | 120d | 2015-03-20 | 2015-07-17 | P-MEP-P-4993 | 316d | 91d | * JWM - 7 Days per week with no holidays | Lead Time & Delivery [600 h] |
|  | 5 | **Monitoring & COntroling Programme** |  | 2015-03-07 | 2015-08-03 |  |  |  |  |  |
| P-MEP-P-5013 |  | Material Submittals of Monitoring & COntroling Programme | 14d | 2015-03-07 | 2015-03-22 | PQ-CS-C-512, P-MEP-P-4973 | 250d | 0d |  | Material Submittals [60 h] |
| P-MEP-P-5023 |  | Material review & Approval of Monitoring & COntroling Programme | 14d | 2015-03-18 | 2015-04-02 | P-MEP-P-5013 SS+10d, P-MEP-P-5013 FF+10d | 250d | 0d |  | Material Approval [40 h] |
| P-MEP-P-5033 |  | P.O of Monitoring & COntroling Programme | 2d | 2015-04-04 | 2015-04-05 | P-MEP-P-5023 | 250d | 0d |  | Purchase Order [20 h] |
| P-MEP-P-5043 |  | Lead Time & Delivery of Monitoring & COntroling Programme | 120d | 2015-04-06 | 2015-08-03 | P-MEP-P-5033 | 299d | 74d | * JWM - 7 Days per week with no holidays | Lead Time & Delivery [600 h] |

| ID | WBS | Activity | Duration | Start | Finish | Predecessors | Total float | Free float | Calendar | Resources | Cost |
| --- | --- | --- | --- | --- | --- | --- | --- | --- | --- | --- | --- |
|  | 7 | **Gas System** |  | 2015-02-03 | 2015-11-05 |  |  |  |  |  |  |
|  | 1 | **HDPE pipes - Gas Pipes** |  | 2015-02-03 | 2015-07-03 |  |  |  |  |  |  |
| P-MEP-P-5053 |  | Material Submittals of HDPE pipe - Gas | 14d | 2015-02-03 | 2015-02-19 | PQ-CS-C-532 | 113d | 0d |  | Material Submittals [60 h] | 710.75 |
| P-MEP-P-5063 |  | Material review & Approval of HDPE pipe - Gas | 14d | 2015-02-16 | 2015-03-03 | P-MEP-P-5053 SS+10d, P-MEP-P-5053 FF+10d | 169d | 0d |  | Material Approval [40 h] | 710.75 |
| P-MEP-P-5073 |  | P.O of HDPE pipe - Gas | 2d | 2015-03-04 | 2015-03-05 | P-MEP-P-5063 | 197d | 0d |  | Purchase Order [20 h] |  |
| P-MEP-P-5083 |  | Lead Time & Delivery of HDPE pipe - Gas | 120d | 2015-03-06 | 2015-07-03 | P-MEP-P-5073 | 236d | 33d | * JWM - 7 Days per week with no holidays | Lead Time & Delivery [600 h] |  |
|  | 2 | **Gas Storage Tank** |  | 2015-02-21 | 2015-11-05 |  |  |  |  |  |  |
| P-MEP-P-5093 |  | Material Submittals of Gas Storage Tank | 14d | 2015-02-21 | 2015-03-08 | PQ-CS-C-532, P-MEP-P-5053 | 113d | 0d |  | Material Submittals [60 h] | 710.75 |
| P-MEP-P-5103 |  | Material review & Approval of Gas Storage Tank | 14d | 2015-03-04 | 2015-03-19 | P-MEP-P-5093 SS+10d, P-MEP-P-5093 FF+10d | 155d | 43d |  | Material Approval [40 h] | 710.75 |
| P-MEP-P-5113 |  | P.O of Gas Storage Tank | 2d | 2015-07-07 | 2015-07-08 | P-MEP-P-5103, G-A-M-W-003 | 112d | 0d |  | Purchase Order [20 h] |  |
| P-MEP-P-5123 |  | Lead Time & Delivery of Gas Storage Tank | 120d | 2015-07-09 | 2015-11-05 | P-MEP-P-5113 | 137d | 1d | * JWM - 7 Days per week with no holidays | Lead Time & Delivery [600 h] |  |
|  | 3 | **Gas Valves** |  | 2015-03-09 | 2015-08-05 |  |  |  |  |  |  |
| P-MEP-P-5133 |  | Material Submittals of Gas Valves | 14d | 2015-03-09 | 2015-03-24 | PQ-CS-C-532, P-MEP-P-5093 | 113d | 0d |  | Material Submittals [60 h] | 710.75 |
| P-MEP-P-5143 |  | Material review & Approval of Gas Valves | 14d | 2015-03-21 | 2015-04-05 | P-MEP-P-5133 SS+10d, P-MEP-P-5133 FF+10d | 141d | 0d |  | Material Approval [40 h] | 710.75 |
| P-MEP-P-5153 |  | P.O of Gas Valves | 2d | 2015-04-06 | 2015-04-07 | P-MEP-P-5143 | 191d | 0d |  | Purchase Order [20 h] |  |
| P-MEP-P-5163 |  | Lead Time & Delivery of Gas Valves | 120d | 2015-04-08 | 2015-08-05 | P-MEP-P-5153 | 229d | 93d | * JWM - 7 Days per week with no holidays | Lead Time & Delivery [600 h] |  |
|  | 4 | **Control Panel for Gas system** |  | 2015-03-25 | 2015-08-21 |  |  |  |  |  |  |
| P-MEP-P-5173 |  | Material Submittals of Gas Control Panel | 14d | 2015-03-25 | 2015-04-09 | PQ-CS-C-532, P-MEP-P-5133 | 113d | 0d |  | Material Submittals [60 h] | 710.75 |
| P-MEP-P-5183 |  | Material review & Approval of Gas - Control Panel | 14d | 2015-04-06 | 2015-04-21 | P-MEP-P-5173 SS+10d, P-MEP-P-5173 FF+10d | 127d | 0d |  | Material Approval [40 h] | 710.75 |
| P-MEP-P-5193 |  | P.O of Gas - Control Panel | 2d | 2015-04-22 | 2015-04-23 | P-MEP-P-5183 | 204d | 0d |  | Purchase Order [20 h] |  |
| P-MEP-P-5203 |  | Lead Time & Delivery of Gas - Control Panel | 120d | 2015-04-24 | 2015-08-21 | P-MEP-P-5193 | 245d | 106d | * JWM - 7 Days per week with no holidays | Lead Time & Delivery [600 h] |  |
|  | 5 | **electric vaporizer system** |  | 2015-04-11 | 2015-09-07 |  |  |  |  |  |  |
| P-MEP-P-5213 |  | Material Submittals of Electrical Vaporizer system | 14d | 2015-04-11 | 2015-04-26 | PQ-CS-C-532, P-MEP-P-5173 | 113d | 0d |  | Material Submittals [60 h] | 710.75 |
| P-MEP-P-5223 |  | Material review & Approval of Electrical Vaporizer system | 14d | 2015-04-22 | 2015-05-07 | P-MEP-P-5213 SS+10d, P-MEP-P-5213 FF+10d | 113d | 0d |  | Material Approval [40 h] | 710.75 |
| P-MEP-P-5233 |  | P.O of Electrical Vaporizer system | 2d | 2015-05-09 | 2015-05-10 | P-MEP-P-5223 | 190d | 0d |  | Purchase Order [20 h] |  |
| P-MEP-P-5243 |  | Lead Time & Delivery of Electrical Vaporizer system | 120d | 2015-05-11 | 2015-09-07 | P-MEP-P-5233 | 228d | 89d | * JWM - 7 Days per week with no holidays | Lead Time & Delivery [600 h] |  |

Notes:
- P-MEP-P-5053: Expenses: 1 710.75
- P-MEP-P-5063: Expenses: 1 710.75
- P-MEP-P-5093: Expenses: 1 710.75
- P-MEP-P-5103: Expenses: 1 710.75
- P-MEP-P-5133: Expenses: 1 710.75
- P-MEP-P-5143: Expenses: 1 710.75
- P-MEP-P-5173: Expenses: 1 710.75
- P-MEP-P-5183: Expenses: 1 710.75
- P-MEP-P-5213: Expenses: 1 710.75
- P-MEP-P-5223: Expenses: 1 710.75

| ID | WBS | Activity | Duration | Start | Finish | Predecessors | Total float | Free float | Calendar | Resources | Cost |
| --- | --- | --- | --- | --- | --- | --- | --- | --- | --- | --- | --- |
|  | 3 | **Architectural / FInishes** |  | 2014-10-20 | 2016-02-04 |  |  |  |  |  |  |
|  | 1 | **Gypsum Board Partition & Ceiling** |  | 2014-10-20 | 2015-02-06 |  |  |  |  |  |  |
| P-AF-GB-2293 |  | Material Submittals of Gypsum Board Partition & Ceiling | 14d | 2014-10-20 | 2014-11-04 | PQ-CS-C-772 | 245d | 0d |  | Material Submittals [60 h] | 33,636.48 |
| P-AF-GB-2303 |  | Material review & Approval of Gypsum Board Partition & Ceiling | 14d | 2014-11-01 | 2014-11-16 | P-AF-GB-2293 SS+10d, P-AF-GB-2293 FF+10d | 245d | 0d |  | Material Approval [40 h] | 33,636.48 |
| P-AF-GB-2313 |  | P.O of Gypsum Board Partition & Ceiling | 2d | 2014-11-17 | 2014-11-18 | P-AF-GB-2303 | 245d | 0d |  | Purchase Order [20 h] |  |
| P-AF-GB-2323 |  | Lead Time & Delivery of Gypsum Board Partition & Ceiling | 80d | 2014-11-19 | 2015-02-06 | P-AF-GB-2313 | 291d | 284d | * JWM - 7 Days per week with no holidays | Lead Time & Delivery [600 h] |  |
|  | 14 | **Cement Board** |  | 2015-01-11 | 2015-06-09 |  |  |  |  |  |  |
| P-AF-B-1173 |  | Material Submittals of Cement Boards | 14d | 2015-01-11 | 2015-01-26 | PQ-CS-C-792 | 132d | 0d |  | Material Submittals [60 h] |  |
| P-AF-B-1183 |  | Material review & Approval of Cement Boards | 14d | 2015-01-22 | 2015-02-07 | P-AF-B-1173 SS+10d, P-AF-B-1173 FF+10d | 132d | 0d |  | Material Approval [40 h] |  |
| P-AF-B-1193 |  | P.O of Cement Boards | 2d | 2015-02-08 | 2015-02-09 | P-AF-B-1183 | 132d | 0d |  | Purchase Order [20 h] |  |
| P-AF-B-1203 |  | Lead Time & Delivery of Cement Boards | 120d | 2015-02-10 | 2015-06-09 | P-AF-B-1193 | 158d | 0d | * JWM - 7 Days per week with no holidays | Lead Time & Delivery [600 h] |  |
|  | 19 | **Raised Flooring** |  | 2014-11-24 | 2015-04-23 |  |  |  |  |  |  |
| P-AF-B-1373 |  | Material Submittals of Raised Floorinng | 14d | 2014-11-24 | 2014-12-09 | PQ-CS-C-812 | 321d | 0d |  | Material Submittals [60 h] | 16,009.11 |
| P-AF-B-1383 |  | Material review & Approval of Raised Floorinng | 14d | 2014-12-06 | 2014-12-22 | P-AF-B-1373 SS+10d, P-AF-B-1373 FF+10d | 321d | 0d |  | Material Approval [40 h] | 16,009.11 |
| P-AF-B-1393 |  | P.O of Raised Floorinng | 2d | 2014-12-23 | 2014-12-24 | P-AF-B-1383 | 321d | 0d |  | Purchase Order [20 h] |  |
| P-AF-B-1403 |  | Lead Time & Delivery of Raised Floorinng | 120d | 2014-12-25 | 2015-04-23 | P-AF-B-1393 | 383d | 205d | * JWM - 7 Days per week with no holidays | Lead Time & Delivery [600 h] |  |
|  | 15 | **Porcelain Tiles** |  | 2014-12-17 | 2015-05-17 |  |  |  |  |  |  |
| P-AF-B-1213 |  | Material Submittals of Porcelain Tiles | 14d | 2014-12-17 | 2015-01-03 | PQ-CS-C-822 | 317d | 0d |  | Material Submittals [60 h] |  |
| P-AF-B-1223 |  | Material review & Approval of Porcelain Tiles | 14d | 2014-12-30 | 2015-01-14 | P-AF-B-1213 SS+10d, P-AF-B-1213 FF+10d | 317d | 0d |  | Material Approval [40 h] |  |
| P-AF-B-1233 |  | P.O of Porcelain Tiles | 2d | 2015-01-15 | 2015-01-17 | P-AF-B-1223 | 317d | 0d |  | Purchase Order [20 h] |  |
| P-AF-B-1243 |  | Lead Time & Delivery of Porcelain Tiles | 120d | 2015-01-18 | 2015-05-17 | P-AF-B-1233 | 378d | 199d | * JWM - 7 Days per week with no holidays | Lead Time & Delivery [600 h] |  |
|  | 17 | **Carpet Tiles** |  | 2015-01-22 | 2015-06-22 |  |  |  |  |  |  |
| P-AF-B-1293 |  | Material Submittals of Carpet Tiles | 14d | 2015-01-22 | 2015-02-07 | PQ-CS-C-842 | 311d | 0d |  | Material Submittals [60 h] | 4,574.03 |
| P-AF-B-1303 |  | Material review & Approval of Carpet Tiles | 14d | 2015-02-03 | 2015-02-19 | P-AF-B-1293 SS+10d, P-AF-B-1293 FF+10d | 311d | 0d |  | Material Approval [40 h] | 4,574.03 |
| P-AF-B-1313 |  | P.O of Carpet Tiles | 2d | 2015-02-21 | 2015-02-22 | P-AF-B-1303 | 311d | 0d |  | Purchase Order [20 h] |  |
| P-AF-B-1323 |  | Lead Time & Delivery of Carpet Tiles | 120d | 2015-02-23 | 2015-06-22 | P-AF-B-1313 | 371d | 194d | * JWM - 7 Days per week with no holidays | Lead Time & Delivery [600 h] |  |

Notes:
- P-AF-GB-2293: Expenses: p 11435.1; G 22201.4
- P-AF-GB-2303: Expenses: p 11435.1; G 22201.4
- P-AF-B-1373: Expenses: RF 16009.1
- P-AF-B-1383: Expenses: RF 16009.1
- P-AF-B-1293: Expenses: 1 4574.03
- P-AF-B-1303: Expenses: 1 4574.03

| ID | WBS | Activity | Duration | Start | Finish | Predecessors | Total float | Free float | Calendar | Resources | Cost |
| --- | --- | --- | --- | --- | --- | --- | --- | --- | --- | --- | --- |
|  | 23 | **Stainless Steel Tiling** |  | 2015-03-11 | 2015-08-07 |  |  |  |  |  |  |
| P-AF-B-1533 |  | Material Submittals of Stainless Steel Tiling | 14d | 2015-03-11 | 2015-03-26 | PQ-CS-C-872 | 247d | 0d |  | Material Submittals [60 h] | 4,574.03 |
| P-AF-B-1543 |  | Material review & Approval of Stainless Steel Tiling | 14d | 2015-03-23 | 2015-04-07 | P-AF-B-1533 SS+10d, P-AF-B-1533 FF+10d | 247d | 0d |  | Material Approval [40 h] | 4,574.03 |
| P-AF-B-1553 |  | P.O of Stainless Steel Tiling | 2d | 2015-04-08 | 2015-04-09 | P-AF-B-1543 | 247d | 0d |  | Purchase Order [20 h] |  |
| P-AF-B-1563 |  | Lead Time & Delivery of Stainless Steel Tiling | 120d | 2015-04-10 | 2015-08-07 | P-AF-B-1553 | 296d | 117d | * JWM - 7 Days per week with no holidays | Lead Time & Delivery [600 h] |  |
|  | 12 | **Toilet Cubicle Partitions** |  | 2015-04-09 | 2015-09-06 |  |  |  |  |  |  |
| P-AF-B-1093 |  | Material Submittals of Toilet Cubical Partitions | 14d | 2015-04-09 | 2015-04-25 | PQ-CS-C-892 | 176d | 0d |  | Material Submittals [60 h] | 6,861.05 |
| P-AF-B-1103 |  | Material review & Approval of Toilet Cubical Partitions | 14d | 2015-04-21 | 2015-05-06 | P-AF-B-1093 SS+10d, P-AF-B-1093 FF+10d | 176d | 0d |  | Material Approval [40 h] | 6,861.05 |
| P-AF-B-1113 |  | P.O of Toilet Cubical Partitions | 2d | 2015-05-07 | 2015-05-09 | P-AF-B-1103 | 176d | 0d |  | Purchase Order [20 h] |  |
| P-AF-B-1123 |  | Lead Time & Delivery of Toilet Cubical Partitions | 120d | 2015-05-10 | 2015-09-06 | P-AF-B-1113 | 211d | 0d | * JWM - 7 Days per week with no holidays | Lead Time & Delivery [600 h] |  |
|  | 18 | **Metal Ceiling Tiles** |  | 2014-12-30 | 2015-05-28 |  |  |  |  |  |  |
| P-AF-B-1333 |  | Material Submittals of Metal Ceiling Tiles | 14d | 2014-12-30 | 2015-01-14 | PQ-CS-C-912 | 120d | 0d |  | Material Submittals [60 h] | 18,296.13 |
| P-AF-B-1343 |  | Material review & Approval of Metal Ceiling Tiles | 14d | 2015-01-11 | 2015-01-26 | P-AF-B-1333 SS+10d, P-AF-B-1333 FF+10d | 232d | 0d |  | Material Approval [40 h] | 18,296.13 |
| P-AF-B-1353 |  | P.O of Metal Ceiling Tiles | 2d | 2015-01-27 | 2015-01-28 | P-AF-B-1343 | 232d | 0d |  | Purchase Order [20 h] |  |
| P-AF-B-1363 |  | Lead Time & Delivery of Metal Ceiling Tiles | 120d | 2015-01-29 | 2015-05-28 | P-AF-B-1353 | 278d | 141d | * JWM - 7 Days per week with no holidays | Lead Time & Delivery [600 h] |  |
|  | 16 | **E-poxy** |  | 2015-02-03 | 2015-07-03 |  |  |  |  |  |  |
| P-AF-B-1253 |  | Material Submittals of E-poxy Paint | 14d | 2015-02-03 | 2015-02-19 | PQ-CS-C-932 | 277d | 0d |  | Material Submittals [60 h] |  |
| P-AF-B-1263 |  | Material review & Approval of E-poxy Paint | 14d | 2015-02-16 | 2015-03-03 | P-AF-B-1253 SS+10d, P-AF-B-1253 FF+10d | 277d | 0d |  | Material Approval [40 h] |  |
| P-AF-B-1273 |  | P.O of E-poxy Paint | 2d | 2015-03-04 | 2015-03-05 | P-AF-B-1263 | 277d | 0d |  | Purchase Order [20 h] |  |
| P-AF-B-1283 |  | Lead Time & Delivery of E-poxy Paint | 120d | 2015-03-06 | 2015-07-03 | P-AF-B-1273 | 331d | 152d | * JWM - 7 Days per week with no holidays | Lead Time & Delivery [600 h] |  |
|  | 13 | **Wall & Corner Guard** |  | 2015-07-05 | 2015-12-03 |  |  |  |  |  |  |
| P-AF-B-3813 |  | Material Submittals of Wall & Corner Guard | 14d | 2015-07-05 | 2015-07-22 | P-AF-B-893 | 188d | 0d |  | Material Submittals [60 h] | 13,722.1 |
| P-AF-B-3823 |  | Material review & Approval of Wall & Corner Guard | 14d | 2015-07-19 | 2015-08-03 | P-AF-B-3813 SS+10d, P-AF-B-3813 FF+10d | 188d | 0d |  | Material Approval [40 h] | 13,722.1 |
| P-AF-B-3833 |  | P.O of Wall & Corner Guard | 2d | 2015-08-04 | 2015-08-05 | P-AF-B-3823 | 188d | 0d |  | Purchase Order [20 h] |  |
| P-AF-B-3843 |  | Lead Time & Delivery of Wall & Corner Guard | 120d | 2015-08-06 | 2015-12-03 | P-AF-B-3833 | 225d | 44d | * JWM - 7 Days per week with no holidays | Lead Time & Delivery [600 h] |  |

Notes:
- P-AF-B-1533: Expenses: 1 4574.03
- P-AF-B-1543: Expenses: 1 4574.03
- P-AF-B-1093: Expenses: C 6861.05
- P-AF-B-1103: Expenses: C 6861.05
- P-AF-B-1333: Expenses: 1 18296.1
- P-AF-B-1343: Expenses: 1 18296.1
- P-AF-B-3813: Expenses: 1 13722.1
- P-AF-B-3823: Expenses: 1 13722.1

| ID | WBS | Activity | Duration | Start | Finish | Predecessors | Total float | Free float | Calendar | Resources | Cost |
| --- | --- | --- | --- | --- | --- | --- | --- | --- | --- | --- | --- |
|  | 20 | **Paint** |  | 2015-03-11 | 2015-08-07 |  |  |  |  |  |  |
| P-AF-B-1413 |  | Material Submittals of Paint | 14d | 2015-03-11 | 2015-03-26 | PQ-CS-C-952 | 106d | 0d |  | Material Submittals [60 h] | 4,574.03 |
| P-AF-B-1423 |  | Material review & Approval of Paint | 14d | 2015-03-23 | 2015-04-07 | P-AF-B-1413 SS+10d, P-AF-B-1413 FF+10d | 106d | 0d |  | Material Approval [40 h] | 4,574.03 |
| P-AF-B-1433 |  | P.O of Paint | 2d | 2015-04-08 | 2015-04-09 | P-AF-B-1423 | 106d | 0d |  | Purchase Order [20 h] |  |
| P-AF-B-1443 |  | Lead Time & Delivery of Paint | 120d | 2015-04-10 | 2015-08-07 | P-AF-B-1433 | 126d | 0d | * JWM - 7 Days per week with no holidays | Lead Time & Delivery [600 h] |  |
|  | 11 | **Internal Glazed windows** |  | 2015-03-11 | 2015-08-07 |  |  |  |  |  |  |
| P-AF-B-1053 |  | Material Submittals of Internal Glazed Windows | 14d | 2015-03-11 | 2015-03-26 | PQ-CS-C-972 | 306d | 0d |  | Material Submittals [60 h] |  |
| P-AF-B-1063 |  | Material review & Approval of Internal Glazed Windows | 14d | 2015-03-23 | 2015-04-07 | P-AF-B-1053 SS+10d, P-AF-B-1053 FF+10d | 306d | 0d |  | Material Approval [40 h] |  |
| P-AF-B-1073 |  | P.O of Internal Glazed Windows | 2d | 2015-04-08 | 2015-04-09 | P-AF-B-1063 | 306d | 0d |  | Purchase Order [20 h] |  |
| P-AF-B-1083 |  | Lead Time & Delivery of Internal Glazed Windows | 120d | 2015-04-10 | 2015-08-07 | P-AF-B-1073 | 366d | 148d | * JWM - 7 Days per week with no holidays | Lead Time & Delivery [600 h] |  |
|  | 10 | **Glass Partition & Screens** |  | 2015-04-09 | 2015-09-06 |  |  |  |  |  |  |
| P-AF-B-1013 |  | Material Submittals of Glass Partitions & Screens | 14d | 2015-04-09 | 2015-04-25 | PQ-CS-C-992 | 286d | 0d |  | Material Submittals [60 h] | 6,861.05 |
| P-AF-B-1023 |  | Material review & Approval of Glass Partitions & Screens | 14d | 2015-04-21 | 2015-05-06 | P-AF-B-1013 SS+10d, P-AF-B-1013 FF+10d | 286d | 0d |  | Material Approval [40 h] | 6,861.05 |
| P-AF-B-1033 |  | P.O of Glass Partitions & Screens | 2d | 2015-05-07 | 2015-05-09 | P-AF-B-1023 | 286d | 0d |  | Purchase Order [20 h] |  |
| P-AF-B-1043 |  | Lead Time & Delivery of Glass Partitions & Screens | 120d | 2015-05-10 | 2015-09-06 | P-AF-B-1033 | 342d | 118d | * JWM - 7 Days per week with no holidays | Lead Time & Delivery [600 h] |  |
|  | 8 | **Wooden Doors** |  | 2015-05-14 | 2015-10-11 |  |  |  |  |  |  |
| P-AF-B-933 |  | Material Submittals of Woden Doors | 14d | 2015-05-14 | 2015-05-30 | PQ-CS-C-1012 | 208d | 0d |  | Material Submittals [60 h] | 5,336.37 |
| P-AF-B-943 |  | Material review & Approval of Woden Doors | 14d | 2015-05-26 | 2015-06-10 | P-AF-B-933 SS+10d, P-AF-B-933 FF+10d | 208d | 0d |  | Material Approval [40 h] | 5,336.37 |
| P-AF-B-953 |  | P.O of Woden Doors | 2d | 2015-06-11 | 2015-06-13 | P-AF-B-943 | 208d | 0d |  | Purchase Order [20 h] |  |
| P-AF-B-963 |  | Lead Time & Delivery of Woden Doors | 120d | 2015-06-14 | 2015-10-11 | P-AF-B-953 | 251d | 35d | * JWM - 7 Days per week with no holidays | Lead Time & Delivery [600 h] |  |
|  | 7 | **Glazed Doors** |  | 2015-06-18 | 2015-11-17 |  |  |  |  |  |  |
| P-AF-B-893 |  | Material Submittals of Glazed Doors | 14d | 2015-06-18 | 2015-07-04 | PQ-CS-C-1032 | 188d | 0d |  | Material Submittals [60 h] | 5,336.37 |
| P-AF-B-903 |  | Material review & Approval of Glazed Doors | 14d | 2015-06-30 | 2015-07-18 | P-AF-B-893 SS+10d, P-AF-B-893 FF+10d | 221d | 0d |  | Material Approval [40 h] | 5,336.37 |
| P-AF-B-913 |  | P.O of Glazed Doors | 2d | 2015-07-19 | 2015-07-20 | P-AF-B-903 | 221d | 0d |  | Purchase Order [20 h] |  |
| P-AF-B-923 |  | Lead Time & Delivery of Glazed Doors | 120d | 2015-07-21 | 2015-11-17 | P-AF-B-913 | 264d | 46d | * JWM - 7 Days per week with no holidays | Lead Time & Delivery [600 h] |  |

Notes:
- P-AF-B-1413: Expenses: 1 4574.03
- P-AF-B-1423: Expenses: 1 4574.03
- P-AF-B-1013: Expenses: 1 6861.05
- P-AF-B-1023: Expenses: 1 6861.05
- P-AF-B-933: Expenses: 1 5336.37
- P-AF-B-943: Expenses: 1 5336.37
- P-AF-B-893: Expenses: 1 5336.37
- P-AF-B-903: Expenses: 1 5336.37

| ID | WBS | Activity | Duration | Start | Finish | Predecessors | Total float | Free float | Calendar | Resources | Cost |
| --- | --- | --- | --- | --- | --- | --- | --- | --- | --- | --- | --- |
|  | 6 | **Steel Doors** |  | 2015-02-03 | 2015-07-03 |  |  |  |  |  |  |
| P-AF-B-853 |  | Material Submittals of Steel Doors | 14d | 2015-02-03 | 2015-02-19 | PQ-CS-C-1052 | 336d | 0d |  | Material Submittals [60 h] | 5,336.37 |
| P-AF-B-863 |  | Material review & Approval of Steel Doors | 14d | 2015-02-16 | 2015-03-03 | P-AF-B-853 SS+10d, P-AF-B-853 FF+10d | 336d | 0d |  | Material Approval [40 h] | 5,336.37 |
| P-AF-B-873 |  | P.O of Steel Doors | 2d | 2015-03-04 | 2015-03-05 | P-AF-B-863 | 336d | 0d |  | Purchase Order [20 h] |  |
| P-AF-B-883 |  | Lead Time & Delivery of Steel Doors | 120d | 2015-03-06 | 2015-07-03 | P-AF-B-873 | 401d | 183d | * JWM - 7 Days per week with no holidays | Lead Time & Delivery [600 h] |  |
|  | 2 | **Steel ladder** |  | 2015-03-11 | 2015-08-07 |  |  |  |  |  |  |
| P-AF-B-693 |  | Material Submittals of Steel Ladder | 14d | 2015-03-11 | 2015-03-26 | PQ-CS-C-1072 | 306d | 0d |  | Material Submittals [60 h] |  |
| P-AF-B-703 |  | Material review & Approval of Steel Ladder | 14d | 2015-03-23 | 2015-04-07 | P-AF-B-693 SS+10d, P-AF-B-693 FF+10d | 306d | 0d |  | Material Approval [40 h] |  |
| P-AF-B-713 |  | P.O of Steel Ladder | 2d | 2015-04-08 | 2015-04-09 | P-AF-B-703 | 306d | 0d |  | Purchase Order [20 h] |  |
| P-AF-B-723 |  | Lead Time & Delivery of Steel Ladder | 120d | 2015-04-10 | 2015-08-07 | P-AF-B-713 | 366d | 148d | * JWM - 7 Days per week with no holidays | Lead Time & Delivery [600 h] |  |
|  | 9 | **Steel Roller Shutter** |  | 2015-04-15 | 2015-09-11 |  |  |  |  |  |  |
| P-AF-B-973 |  | Material Submittals of Steel Roller Sutter | 14d | 2015-04-15 | 2015-04-30 | PQ-CS-C-1092 | 276d | 0d |  | Material Submittals [60 h] |  |
| P-AF-B-983 |  | Material review & Approval of Steel Roller Sutter | 14d | 2015-04-27 | 2015-05-12 | P-AF-B-973 SS+10d, P-AF-B-973 FF+10d | 276d | 0d |  | Material Approval [40 h] |  |
| P-AF-B-993 |  | P.O of Steel Roller Sutter | 2d | 2015-05-13 | 2015-05-14 | P-AF-B-983 | 276d | 0d |  | Purchase Order [20 h] |  |
| P-AF-B-1003 |  | Lead Time & Delivery of Steel Roller Sutter | 120d | 2015-05-15 | 2015-09-11 | P-AF-B-993 | 331d | 113d | * JWM - 7 Days per week with no holidays | Lead Time & Delivery [600 h] |  |
|  | 5 | **Steel handrail and balustrade** |  | 2015-05-20 | 2015-10-16 |  |  |  |  |  |  |
| P-AF-B-813 |  | Material Submittals of Steel Handrail & Ballustrades | 14d | 2015-05-20 | 2015-06-04 | PQ-CS-C-1112 | 332d | 0d |  | Material Submittals [60 h] |  |
| P-AF-B-823 |  | Material review & Approval of Steel Handrail & Ballustrades | 14d | 2015-06-01 | 2015-06-16 | P-AF-B-813 SS+10d, P-AF-B-813 FF+10d | 332d | 0d |  | Material Approval [40 h] |  |
| P-AF-B-833 |  | P.O of Steel Handrail & Ballustrades | 2d | 2015-06-17 | 2015-06-18 | P-AF-B-823 | 332d | 0d |  | Purchase Order [20 h] |  |
| P-AF-B-843 |  | Lead Time & Delivery of Steel Handrail & Ballustrades | 120d | 2015-06-19 | 2015-10-16 | P-AF-B-833 | 399d | 229d | * JWM - 7 Days per week with no holidays | Lead Time & Delivery [600 h] |  |
|  | 22 | **Smoke Curtain** |  | 2015-01-15 | 2015-08-14 |  |  |  |  |  |  |
| P-AF-B-1493 |  | Material Submittals of Smoke Curtain | 14d | 2015-01-15 | 2015-01-31 | PQ-CS-C-1132, P-AF-B-1333 | 120d | 0d |  | Material Submittals [60 h] |  |
| P-AF-B-1503 |  | Material review & Approval of Smoke Curtain | 14d | 2015-01-27 | 2015-02-12 | P-AF-B-1493 SS+10d, P-AF-B-1493 FF+10d | 120d | 0d |  | Material Approval [40 h] |  |
| P-AF-B-1513 |  | P.O of Smoke Curtain | 2d | 2015-02-14 | 2015-02-15 | P-AF-B-1503 | 120d | 0d |  | Purchase Order [20 h] |  |
| P-AF-B-1523 |  | Lead Time & Delivery of Smoke Curtain | 180d | 2015-02-16 | 2015-08-14 | P-AF-B-1513 | 140d | 0d | * JWM - 7 Days per week with no holidays | Lead Time & Delivery [600 h] |  |

Notes:
- P-AF-B-853: Expenses: 1 5336.37
- P-AF-B-863: Expenses: 1 5336.37

| ID | WBS | Activity | Duration | Start | Finish | Predecessors | Total float | Free float | Calendar | Resources |
| --- | --- | --- | --- | --- | --- | --- | --- | --- | --- | --- |
|  | 4 | **Bumper Rails** |  | 2015-06-24 | 2015-11-23 |  |  |  |  |  |
| P-AF-B-773 |  | Material Submittals of Bumper Rails | 14d | 2015-06-24 | 2015-07-09 | PQ-CS-C-1152 | 398d | 0d |  | Material Submittals [60 h] |
| P-AF-B-783 |  | Material review & Approval of Bumper Rails | 14d | 2015-07-06 | 2015-07-23 | P-AF-B-773 SS+10d, P-AF-B-773 FF+10d | 398d | 0d |  | Material Approval [40 h] |
| P-AF-B-793 |  | P.O of Bumper Rails | 2d | 2015-07-25 | 2015-07-26 | P-AF-B-783 | 398d | 0d |  | Purchase Order [20 h] |
| P-AF-B-803 |  | Lead Time & Delivery of Bumper Rails | 120d | 2015-07-27 | 2015-11-23 | P-AF-B-793 | 478d |  | * JWM - 7 Days per week with no holidays | Lead Time & Delivery [600 h] |
|  | 21 | **Kerbs & Paving** |  | 2015-08-01 | 2015-12-28 |  |  |  |  |  |
| P-AF-B-1453 |  | Material Submittals of Kerbs & Paving | 14d | 2015-08-01 | 2015-08-16 | PQ-CS-C-1172 | 318d | 0d |  | Material Submittals [60 h] |
| P-AF-B-1463 |  | Material review & Approval of Kerbs & Paving | 14d | 2015-08-12 | 2015-08-27 | P-AF-B-1453 SS+10d, P-AF-B-1453 FF+10d | 318d | 0d |  | Material Approval [40 h] |
| P-AF-B-1473 |  | P.O of Kerbs & Paving | 2d | 2015-08-29 | 2015-08-30 | P-AF-B-1463 | 318d | 0d |  | Purchase Order [20 h] |
| P-AF-B-1483 |  | Lead Time & Delivery of Kerbs & Paving | 120d | 2015-08-31 | 2015-12-28 | P-AF-B-1473 | 384d | 372d | * JWM - 7 Days per week with no holidays | Lead Time & Delivery [600 h] |
|  | 3 | **Steel grating system** |  | 2015-09-05 | 2016-02-04 |  |  |  |  |  |
| P-AF-B-733 |  | Material Submittals of Steel Grating System | 14d | 2015-09-05 | 2015-09-23 | PQ-CS-C-1192 | 307d | 0d |  | Material Submittals [60 h] |
| P-AF-B-743 |  | Material review & Approval of Steel Grating System | 14d | 2015-09-16 | 2015-10-05 | P-AF-B-733 SS+10d, P-AF-B-733 FF+10d | 307d | 0d |  | Material Approval [40 h] |
| P-AF-B-753 |  | P.O of Steel Grating System | 2d | 2015-10-06 | 2015-10-07 | P-AF-B-743 | 307d | 0d |  | Purchase Order [20 h] |
| P-AF-B-763 |  | Lead Time & Delivery of Steel Grating System | 120d | 2015-10-08 | 2016-02-04 | P-AF-B-753 | 369d | 358d | * JWM - 7 Days per week with no holidays | Lead Time & Delivery [600 h] |
|  | 6 | **Lifts & Escalators** |  | 2014-11-05 | 2015-12-28 |  |  |  |  |  |
|  | 1 | **Hotel Passenger lifts** |  | 2014-11-05 | 2015-04-23 |  |  |  |  |  |
| P-AF-B-1573 |  | Material Submittals of Hotel Passenger Lifts | 14d | 2014-11-05 | 2014-11-20 | PQ-CS-C-572 | 232d | 0d |  | Material Submittals [60 h] |
| P-AF-B-1583 |  | Material review & Approval of Hotel Passenger Lifts | 14d | 2014-11-17 | 2014-12-02 | P-AF-B-1573 SS+10d, P-AF-B-1573 FF+10d | 232d | 16d |  | Material Approval [40 h] |
| P-AF-B-1593 |  | P.O of Hotel Passenger Lifts | 2d | 2014-12-23 | 2014-12-24 | P-AF-B-1583, SD-CS-B3-872 | 216d | 0d |  | Purchase Order [20 h] |
| P-AF-B-1603 |  | Lead Time & Delivery of Hotel Passenger Lifts | 120d | 2014-12-25 | 2015-04-23 | P-AF-B-1593 | 256d | 110d | * JWM - 7 Days per week with no holidays | Lead Time & Delivery [600 h] |
|  | 2 | **Apartment Passenger lifts** |  | 2014-11-05 | 2015-05-28 |  |  |  |  |  |
| P-AF-B-1613 |  | Material Submittals of Apartment Passenger Lifts | 14d | 2014-11-05 | 2014-11-20 | PQ-CS-C-572 | 354d | 0d |  | Material Submittals [60 h] |
| P-AF-B-1623 |  | Material review & Approval of Apartment Passenger Lifts | 14d | 2014-11-17 | 2014-12-02 | P-AF-B-1613 SS+10d, P-AF-B-1613 FF+10d | 354d | 46d |  | Material Approval [40 h] |
| P-AF-B-1633 |  | P.O of Apartment Passenger Lifts | 2d | 2015-01-27 | 2015-01-28 | P-AF-B-1623, SD-CS-B3-892 | 308d | 0d |  | Purchase Order [20 h] |
| P-AF-B-1643 |  | Lead Time & Delivery of Apartment Passenger Lifts | 120d | 2015-01-29 | 2015-05-28 | P-AF-B-1633 | 368d | 358d | * JWM - 7 Days per week with no holidays | Lead Time & Delivery [600 h] |

| ID | WBS | Activity | Duration | Start | Finish | Predecessors | Total float | Free float | Calendar | Resources |
| --- | --- | --- | --- | --- | --- | --- | --- | --- | --- | --- |
|  | 3 | **Service lifts** |  | 2014-11-05 | 2015-07-03 |  |  |  |  |  |
| P-AF-B-1653 |  | Material Submittals of Service Lifts | 14d | 2014-11-05 | 2014-11-20 | PQ-CS-C-572 | 305d | 0d |  | Material Submittals [60 h] |
| P-AF-B-1663 |  | Material review & Approval of Service Lifts | 14d | 2014-11-17 | 2014-12-02 | P-AF-B-1653 SS+10d, P-AF-B-1653 FF+10d | 305d | 76d |  | Material Approval [40 h] |
| P-AF-B-1673 |  | P.O of Service Lifts | 2d | 2015-03-04 | 2015-03-05 | P-AF-B-1663, SD-CS-B3-912 | 229d | 0d |  | Purchase Order [20 h] |
| P-AF-B-1683 |  | Lead Time & Delivery of Service Lifts | 120d | 2015-03-06 | 2015-07-03 | P-AF-B-1673 | 274d | 0d | * JWM - 7 Days per week with no holidays | Lead Time & Delivery [600 h] |
|  | 4 | **Firemans lifts/ Freight lifts** |  | 2014-11-05 | 2015-08-07 |  |  |  |  |  |
| P-AF-B-1693 |  | Material Submittals of Fireman Lifts | 14d | 2014-11-05 | 2014-11-20 | PQ-CS-C-572 | 354d | 0d |  | Material Submittals [60 h] |
| P-AF-B-1703 |  | Material review & Approval of Fireman Lifts | 14d | 2014-11-17 | 2014-12-02 | P-AF-B-1693 SS+10d, P-AF-B-1693 FF+10d | 354d | 106d |  | Material Approval [40 h] |
| P-AF-B-1713 |  | P.O of Fireman Lifts | 2d | 2015-04-08 | 2015-04-09 | P-AF-B-1703, SD-CS-B3-932 | 248d | 0d |  | Purchase Order [20 h] |
| P-AF-B-1723 |  | Lead Time & Delivery of Fireman Lifts | 120d | 2015-04-10 | 2015-08-07 | P-AF-B-1713 | 297d | 295d | * JWM - 7 Days per week with no holidays | Lead Time & Delivery [600 h] |
|  | 5 | **Garbage lift** |  | 2014-11-05 | 2015-09-11 |  |  |  |  |  |
| P-AF-B-1733 |  | Material Submittals of Garbage Lifts | 14d | 2014-11-05 | 2014-11-20 | PQ-CS-C-572 | 436d | 0d |  | Material Submittals [60 h] |
| P-AF-B-1743 |  | Material review & Approval of Garbage Lifts | 14d | 2014-11-17 | 2014-12-02 | P-AF-B-1733 SS+10d, P-AF-B-1733 FF+10d | 436d | 136d |  | Material Approval [40 h] |
| P-AF-B-1753 |  | P.O of Garbage Lifts | 2d | 2015-05-13 | 2015-05-14 | P-AF-B-1743, SD-CS-B3-952 | 300d | 0d |  | Purchase Order [20 h] |
| P-AF-B-1763 |  | Lead Time & Delivery of Garbage Lifts | 120d | 2015-05-15 | 2015-09-11 | P-AF-B-1753 | 359d | 322d | * JWM - 7 Days per week with no holidays | Lead Time & Delivery [600 h] |
|  | 6 | **Panaromic Lift** |  | 2014-11-05 | 2015-10-16 |  |  |  |  |  |
| P-AF-B-1773 |  | Material Submittals of Panaromic Lifts | 14d | 2014-11-05 | 2014-11-20 | PQ-CS-C-572 | 406d | 0d |  | Material Submittals [60 h] |
| P-AF-B-1783 |  | Material review & Approval of Panaromic Lifts | 14d | 2014-11-17 | 2014-12-02 | P-AF-B-1773 SS+10d, P-AF-B-1773 FF+10d | 406d | 166d |  | Material Approval [40 h] |
| P-AF-B-1793 |  | P.O of Panaromic Lifts | 2d | 2015-06-17 | 2015-06-18 | P-AF-B-1783, SD-CS-B3-972 | 240d | 0d |  | Purchase Order [20 h] |
| P-AF-B-1803 |  | Lead Time & Delivery of Panaromic Lifts | 120d | 2015-06-19 | 2015-10-16 | P-AF-B-1793 | 289d | 287d | * JWM - 7 Days per week with no holidays | Lead Time & Delivery [600 h] |
|  | 7 | **Amenities Lifts** |  | 2014-11-05 | 2015-11-23 |  |  |  |  |  |
| P-AF-B-1813 |  | Material Submittals of Amenities Lifts | 14d | 2014-11-05 | 2014-11-20 | PQ-CS-C-572 | 460d | 0d |  | Material Submittals [60 h] |
| P-AF-B-1823 |  | Material review & Approval of Amenities Lifts | 14d | 2014-11-17 | 2014-12-02 | P-AF-B-1813 SS+10d, P-AF-B-1813 FF+10d | 460d | 196d |  | Material Approval [40 h] |
| P-AF-B-1833 |  | P.O of Amenities Lifts | 2d | 2015-07-25 | 2015-07-26 | P-AF-B-1823, SD-CS-B3-992 | 264d | 0d |  | Purchase Order [20 h] |
| P-AF-B-1843 |  | Lead Time & Delivery of Amenities Lifts | 120d | 2015-07-27 | 2015-11-23 | P-AF-B-1833 | 314d | 312d | * JWM - 7 Days per week with no holidays | Lead Time & Delivery [600 h] |

| ID | WBS | Activity | Duration | Start | Finish | Predecessors | Total float | Free float | Calendar | Resources | Cost |
| --- | --- | --- | --- | --- | --- | --- | --- | --- | --- | --- | --- |
|  | 8 | **Hydraulic Lift** |  | 2014-11-05 | 2015-12-28 |  |  |  |  |  |  |
| P-AF-B-1853 |  | Material Submittals of Hydraulic Lifts | 14d | 2014-11-05 | 2014-11-20 | PQ-CS-C-572 | 507d | 0d |  | Material Submittals [60 h] |  |
| P-AF-B-1863 |  | Material review & Approval of Hydraulic Lifts | 14d | 2014-11-17 | 2014-12-02 | P-AF-B-1853 SS+10d, P-AF-B-1853 FF+10d | 507d | 226d |  | Material Approval [40 h] |  |
| P-AF-B-1873 |  | P.O of Hydraulic Lifts | 2d | 2015-08-29 | 2015-08-30 | P-AF-B-1863, SD-CS-B3-1012 | 281d | 0d |  | Purchase Order [20 h] |  |
| P-AF-B-1883 |  | Lead Time & Delivery of Hydraulic Lifts | 120d | 2015-08-31 | 2015-12-28 | P-AF-B-1873 | 337d | 335d | * JWM - 7 Days per week with no holidays | Lead Time & Delivery [600 h] |  |
|  | 9 | **Escalators** |  | 2014-11-05 | 2015-12-28 |  |  |  |  |  |  |
| P-AF-B-1893 |  | Material Submittals of Escalators | 14d | 2014-11-05 | 2014-11-20 | PQ-CS-C-572 | 554d | 0d |  | Material Submittals [60 h] |  |
| P-AF-B-1903 |  | Material review & Approval of Escalators | 14d | 2014-11-17 | 2014-12-02 | P-AF-B-1893 SS+10d, P-AF-B-1893 FF+10d | 554d | 226d |  | Material Approval [40 h] |  |
| P-AF-B-1913 |  | P.O of Escalators | 2d | 2015-08-29 | 2015-08-30 | P-AF-B-1903, SD-CS-B3-1012 | 328d | 0d |  | Purchase Order [20 h] |  |
| P-AF-B-1923 |  | Lead Time & Delivery of Escalators | 120d | 2015-08-31 | 2015-12-28 | P-AF-B-1913 | 397d | 394d | * JWM - 7 Days per week with no holidays | Lead Time & Delivery [600 h] |  |
|  | 7 | **Specialistes & Specialist Equipments** |  | 2015-01-15 | 2015-12-07 |  |  |  |  |  |  |
|  | 1 | **Linen Chute** |  | 2015-01-15 | 2015-06-22 |  |  |  |  |  |  |
| P-MEP-P-5253 |  | Material Submittals of Linen Chute | 14d | 2015-01-15 | 2015-01-31 | PQ-CS-C-552 | 266d | 0d |  | Material Submittals [60 h] |  |
| P-MEP-P-5263 |  | Material review & Approval of Linen Chute | 14d | 2015-01-27 | 2015-02-12 | P-MEP-P-5253 SS+10d, P-MEP-P-5253 FF+10d | 266d | 6d |  | Material Approval [40 h] |  |
| P-MEP-P-5273 |  | P.O of Linen Chute | 2d | 2015-02-21 | 2015-02-22 | P-MEP-P-5263, SD-CS-B3-1042 | 260d | 0d |  | Purchase Order [20 h] |  |
| P-MEP-P-5283 |  | Lead Time & Delivery of Linen Chute | 120d | 2015-02-23 | 2015-06-22 | P-MEP-P-5273 | 310d | 282d | * JWM - 7 Days per week with no holidays | Lead Time & Delivery [600 h] |  |
|  | 2 | **BMU - Building Maintenance Unit** |  | 2015-03-28 | 2015-08-24 |  |  |  |  |  |  |
| P-MEP-P-5293 |  | Material Submittals of BMU | 14d | 2015-03-28 | 2015-04-12 | PQ-CS-C-592 | 104d | 0d |  | Material Submittals [60 h] | 9,148.06 |
| P-MEP-P-5303 |  | Material review & Approval of BMU | 14d | 2015-04-08 | 2015-04-23 | P-MEP-P-5293 SS+10d, P-MEP-P-5293 FF+10d | 104d | 0d |  | Material Approval [40 h] | 9,148.06 |
| P-MEP-P-5313 |  | P.O of BMU | 2d | 2015-04-25 | 2015-04-26 | P-MEP-P-5303 | 104d | 0d |  | Purchase Order [20 h] |  |
| P-MEP-P-5323 |  | Lead Time & Delivery of BMU | 120d | 2015-04-27 | 2015-08-24 | P-MEP-P-5313 | 123d | 58d | * JWM - 7 Days per week with no holidays | Lead Time & Delivery [600 h] |  |
|  | 3 | **Swimming Pools Material** |  | 2015-06-06 | 2015-12-07 |  |  |  |  |  |  |
|  | 4 | **Main Resident Pool** |  | 2015-06-06 | 2015-11-02 |  |  |  |  |  |  |
| P-MEP-P-5333 |  | Material Submittals of Main Resident Pool | 14d | 2015-06-06 | 2015-06-21 | PQ-CS-C-612 | 305d | 0d |  | Material Submittals [60 h] | 3,518.5 |
| P-MEP-P-5343 |  | Material review & Approval of Main Resident Pool | 14d | 2015-06-17 | 2015-07-02 | P-MEP-P-5333 SS+10d, P-MEP-P-5333 FF+10d | 305d | 0d |  | Material Approval [40 h] | 3,518.5 |
| P-MEP-P-5353 |  | P.O of Main Resident Pool | 2d | 2015-07-04 | 2015-07-05 | P-MEP-P-5343 | 305d | 0d |  | Purchase Order [20 h] |  |
| P-MEP-P-5363 |  | Lead Time & Delivery of Main Resident Pool | 120d | 2015-07-06 | 2015-11-02 | P-MEP-P-5353 | 364d | 240d | * JWM - 7 Days per week with no holidays | Lead Time & Delivery [600 h] |  |

Notes:
- P-MEP-P-5293: Expenses: 1 9148.06
- P-MEP-P-5303: Expenses: 1 9148.06
- P-MEP-P-5333: Expenses: 1 3518.5
- P-MEP-P-5343: Expenses: 1 3518.5

| ID | WBS | Activity | Duration | Start | Finish | Predecessors | Total float | Free float | Calendar | Resources | Cost |
| --- | --- | --- | --- | --- | --- | --- | --- | --- | --- | --- | --- |
|  | 1 | **Children Pool** |  | 2015-06-22 | 2015-11-20 |  |  |  |  |  |  |
| P-MEP-P-5373 |  | Material Submittals of Children Pool | 14d | 2015-06-22 | 2015-07-07 | P-MEP-P-5333 | 313d | 0d |  | Material Submittals [60 h] | 3,518.5 |
| P-MEP-P-5383 |  | Material review & Approval of Children Pool | 14d | 2015-07-04 | 2015-07-21 | P-MEP-P-5373 SS+10d, P-MEP-P-5373 FF+10d | 313d | 0d |  | Material Approval [40 h] | 3,518.5 |
| P-MEP-P-5393 |  | P.O of Children Pool | 2d | 2015-07-22 | 2015-07-23 | P-MEP-P-5383 | 313d | 0d |  | Purchase Order [20 h] |  |
| P-MEP-P-5403 |  | Lead Time & Delivery of Children Pool | 120d | 2015-07-24 | 2015-11-20 | P-MEP-P-5393 | 375d | 255d | * JWM - 7 Days per week with no holidays | Lead Time & Delivery [600 h] |  |
|  | 2 | **SPA Pool** |  | 2015-07-08 | 2015-12-07 |  |  |  |  |  |  |
| P-MEP-P-5413 |  | Material Submittals of Shallow Water Fountain | 14d | 2015-07-08 | 2015-07-26 | P-MEP-P-5373 | 368d | 0d |  | Material Submittals [60 h] | 3,518.5 |
| P-MEP-P-5423 |  | Material review & Approval of Shallow Water Fountain | 14d | 2015-07-22 | 2015-08-06 | P-MEP-P-5413 SS+10d, P-MEP-P-5413 FF+10d | 368d | 0d |  | Material Approval [40 h] | 3,518.5 |
| P-MEP-P-5433 |  | P.O of Shallow Water Fountain | 2d | 2015-08-08 | 2015-08-09 | P-MEP-P-5423 | 368d | 0d |  | Purchase Order [20 h] |  |
| P-MEP-P-5443 |  | Lead Time & Delivery of Shallow Water Fountain | 120d | 2015-08-10 | 2015-12-07 | P-MEP-P-5433 | 443d | 326d | * JWM - 7 Days per week with no holidays | Lead Time & Delivery [600 h] |  |
|  | 8 | **Landscaping, External Works & Roads Works** |  | 2015-06-22 | 2016-04-03 |  |  |  |  |  |  |
|  | 1 | **Granite Paving** |  | 2015-06-22 | 2015-11-20 |  |  |  |  |  |  |
| P-MEP-P-5453 |  | Material Submittals of Granite Paving | 14d | 2015-06-22 | 2015-07-07 | PQ-CS-C-632 | 271d | 0d |  | Material Submittals [60 h] | 12,578.59 |
| P-MEP-P-5463 |  | Material review & Approval of Granite Paving | 14d | 2015-07-04 | 2015-07-21 | P-MEP-P-5453 SS+10d, P-MEP-P-5453 FF+10d | 338d | 0d |  | Material Approval [40 h] | 12,578.59 |
| P-MEP-P-5473 |  | P.O of Granite Paving | 2d | 2015-07-22 | 2015-07-23 | P-MEP-P-5463 | 338d | 0d |  | Purchase Order [20 h] |  |
| P-MEP-P-5483 |  | Lead Time & Delivery of Granite Paving | 120d | 2015-07-24 | 2015-11-20 | P-MEP-P-5473 | 404d | 345d | * JWM - 7 Days per week with no holidays | Lead Time & Delivery [600 h] |  |
|  | 2 | **Granite Wall Cladding** |  | 2015-07-08 | 2015-12-07 |  |  |  |  |  |  |
| P-MEP-P-5493 |  | Material Submittals of Granite Wall Cladding | 14d | 2015-07-08 | 2015-07-26 | PQ-CS-C-652, P-MEP-P-5453 | 271d | 0d |  | Material Submittals [60 h] | 12,578.59 |
| P-MEP-P-5503 |  | Material review & Approval of Granite Wall Cladding | 14d | 2015-07-22 | 2015-08-06 | P-MEP-P-5493 SS+10d, P-MEP-P-5493 FF+10d | 346d | 0d |  | Material Approval [40 h] | 12,578.59 |
| P-MEP-P-5513 |  | P.O of Granite Wall Cladding | 2d | 2015-08-08 | 2015-08-09 | P-MEP-P-5503 | 346d | 0d |  | Purchase Order [20 h] |  |
| P-MEP-P-5523 |  | Lead Time & Delivery of Granite Wall Cladding | 120d | 2015-08-10 | 2015-12-07 | P-MEP-P-5513 | 417d | 357d | * JWM - 7 Days per week with no holidays | Lead Time & Delivery [600 h] |  |
|  | 3 | **Water Fountain** |  | 2015-07-27 | 2015-12-23 |  |  |  |  |  |  |
| P-MEP-P-5533 |  | Material Submittals of Water Fountain | 14d | 2015-07-27 | 2015-08-11 | PQ-CS-C-672, P-MEP-P-5493 | 271d | 0d |  | Material Submittals [60 h] |  |
| P-MEP-P-5543 |  | Material review & Approval of Water Fountain | 14d | 2015-08-08 | 2015-08-23 | P-MEP-P-5533 SS+10d, P-MEP-P-5533 FF+10d | 398d | 0d |  | Material Approval [40 h] |  |
| P-MEP-P-5553 |  | P.O of Water Fountain | 2d | 2015-08-24 | 2015-08-25 | P-MEP-P-5543 | 398d | 0d |  | Purchase Order [20 h] |  |
| P-MEP-P-5563 |  | Lead Time & Delivery of Water Fountain | 120d | 2015-08-26 | 2015-12-23 | P-MEP-P-5553 | 478d | 186d | * JWM - 7 Days per week with no holidays | Lead Time & Delivery [600 h] |  |

Notes:
- P-MEP-P-5373: Expenses: 1 3518.5
- P-MEP-P-5383: Expenses: 1 3518.5
- P-MEP-P-5413: Expenses: 1 3518.5
- P-MEP-P-5423: Expenses: 1 3518.5
- P-MEP-P-5453: Expenses: 1 12578.6
- P-MEP-P-5463: Expenses: 1 12578.6
- P-MEP-P-5493: Expenses: 1 12578.6
- P-MEP-P-5503: Expenses: 1 12578.6

| ID | WBS | Activity | Duration | Start | Finish | Predecessors | Total float | Free float | Calendar | Resources |
| --- | --- | --- | --- | --- | --- | --- | --- | --- | --- | --- |
|  | 4 | **Speed Bumps** |  | 2015-08-12 | 2016-01-08 |  |  |  |  |  |
| P-MEP-P-5573 |  | Material Submittals of Speed Bumps | 14d | 2015-08-12 | 2015-08-27 | P-MEP-P-5533 | 271d | 0d |  | Material Submittals [60 h] |
| P-MEP-P-5583 |  | Material review & Approval of Speed Bumps | 14d | 2015-08-24 | 2015-09-08 | P-MEP-P-5573 SS+10d, P-MEP-P-5573 FF+10d | 358d | 0d |  | Material Approval [40 h] |
| P-MEP-P-5593 |  | P.O of Speed Bumps | 2d | 2015-09-09 | 2015-09-10 | P-MEP-P-5583 | 358d | 0d |  | Purchase Order [20 h] |
| P-MEP-P-5603 |  | Lead Time & Delivery of Speed Bumps | 120d | 2015-09-11 | 2016-01-08 | P-MEP-P-5593 | 432d |  | * JWM - 7 Days per week with no holidays | Lead Time & Delivery [600 h] |
|  | 5 | **Plants & Planting** |  | 2015-08-29 | 2016-01-28 |  |  |  |  |  |
| P-MEP-P-5613 |  | Material Submittals of Plants & Planting | 14d | 2015-08-29 | 2015-09-13 | P-MEP-P-5573 | 271d | 0d |  | Material Submittals [60 h] |
| P-MEP-P-5623 |  | Material review & Approval of Plants & Planting | 14d | 2015-09-09 | 2015-09-28 | P-MEP-P-5613 SS+10d, P-MEP-P-5613 FF+10d | 381d | 0d |  | Material Approval [40 h] |
| P-MEP-P-5633 |  | P.O of Plants & Planting | 2d | 2015-09-29 | 2015-09-30 | P-MEP-P-5623 | 381d | 0d |  | Purchase Order [20 h] |
| P-MEP-P-5643 |  | Lead Time & Delivery of Plants & Planting | 120d | 2015-10-01 | 2016-01-28 | P-MEP-P-5633 | 457d | 335d | * JWM - 7 Days per week with no holidays | Lead Time & Delivery [600 h] |
|  | 6 | **Trees** |  | 2015-09-14 | 2016-02-14 |  |  |  |  |  |
| P-MEP-P-5653 |  | Material Submittals of Trees | 14d | 2015-09-14 | 2015-10-03 | P-MEP-P-5613 | 271d | 0d |  | Material Submittals [60 h] |
| P-MEP-P-5663 |  | Material review & Approval of Trees | 14d | 2015-09-29 | 2015-10-14 | P-MEP-P-5653 SS+10d, P-MEP-P-5653 FF+10d | 367d | 0d |  | Material Approval [40 h] |
| P-MEP-P-5673 |  | P.O of Trees | 2d | 2015-10-15 | 2015-10-17 | P-MEP-P-5663 | 367d | 0d |  | Purchase Order [20 h] |
| P-MEP-P-5683 |  | Lead Time & Delivery of Trees | 120d | 2015-10-18 | 2016-02-14 | P-MEP-P-5673 | 440d | 318d | * JWM - 7 Days per week with no holidays | Lead Time & Delivery [600 h] |
|  | 10 | **Grass** |  | 2015-10-04 | 2016-03-01 |  |  |  |  |  |
| P-MEP-P-5693 |  | Material Submittals of Grass | 14d | 2015-10-04 | 2015-10-19 | P-MEP-P-5653 | 271d | 0d |  | Material Submittals [60 h] |
| P-MEP-P-5703 |  | Material review & Approval of Grass | 14d | 2015-10-15 | 2015-10-31 | P-MEP-P-5693 SS+10d, P-MEP-P-5693 FF+10d | 368d | 0d |  | Material Approval [40 h] |
| P-MEP-P-5713 |  | P.O of Grass | 2d | 2015-11-01 | 2015-11-02 | P-MEP-P-5703 | 368d | 0d |  | Purchase Order [20 h] |
| P-MEP-P-5723 |  | Lead Time & Delivery of Grass | 120d | 2015-11-03 | 2016-03-01 | P-MEP-P-5713 | 441d | 320d | * JWM - 7 Days per week with no holidays | Lead Time & Delivery [600 h] |
|  | 7 | **Traffic Coating & Signage** |  | 2015-10-20 | 2016-03-17 |  |  |  |  |  |
| P-MEP-P-5733 |  | Material Submittals of Traffic Coating & Signage | 14d | 2015-10-20 | 2015-11-04 | P-MEP-P-5693 | 271d | 0d |  | Material Submittals [60 h] |
| P-MEP-P-5743 |  | Material review & Approval of Traffic Coating & Signage | 14d | 2015-11-01 | 2015-11-16 | P-MEP-P-5733 SS+10d, P-MEP-P-5733 FF+10d | 271d | 0d |  | Material Approval [40 h] |
| P-MEP-P-5753 |  | P.O of Traffic Coating & Signage | 2d | 2015-11-17 | 2015-11-18 | P-MEP-P-5743 | 271d | 0d |  | Purchase Order [20 h] |
| P-MEP-P-5763 |  | Lead Time & Delivery of Traffic Coating & Signage | 120d | 2015-11-19 | 2016-03-17 | P-MEP-P-5753 | 327d | 316d | * JWM - 7 Days per week with no holidays | Lead Time & Delivery [600 h] |

| ID | WBS | Activity | Duration | Start | Finish | Predecessors | Total float | Free float | Calendar | Resources | Cost |
| --- | --- | --- | --- | --- | --- | --- | --- | --- | --- | --- | --- |
|  | 8 | **Car Park Control Barriers** |  | 2015-11-05 | 2016-04-03 |  |  |  |  |  |  |
| P-MEP-P-5773 |  | Material Submittals of Car Park Control Barriers | 14d | 2015-11-05 | 2015-11-21 | P-MEP-P-5733 | 327d | 0d |  | Material Submittals [60 h] | 18,296.13 |
| P-MEP-P-5783 |  | Material review & Approval of Car Park Control Barriers | 14d | 2015-11-17 | 2015-12-02 | P-MEP-P-5773 SS+10d, P-MEP-P-5773 FF+10d | 327d | 0d |  | Material Approval [40 h] | 18,296.13 |
| P-MEP-P-5793 |  | P.O of Car Park Control Barriers | 2d | 2015-12-03 | 2015-12-05 | P-MEP-P-5783 | 327d | 0d |  | Purchase Order [20 h] |  |
| P-MEP-P-5803 |  | Lead Time & Delivery of Car Park Control Barriers | 120d | 2015-12-06 | 2016-04-03 | P-MEP-P-5793 | 393d | 310d | * JWM - 7 Days per week with no holidays | Lead Time & Delivery [600 h] |  |
|  | 9 | **Hydrolic Metal Bollards** |  | 2015-08-12 | 2016-01-08 |  |  |  |  |  |  |
| P-MEP-P-5813 |  | Material Submittals of Hydraulic Metal Bollards | 14d | 2015-08-12 | 2015-08-27 | PQ-CS-C-712 | 397d | 0d |  | Material Submittals [60 h] |  |
| P-MEP-P-5823 |  | Material review & Approval of Hydraulic Metal Bollards | 14d | 2015-08-24 | 2015-09-08 | P-MEP-P-5813 SS+10d, P-MEP-P-5813 FF+10d | 397d | 0d |  | Material Approval [40 h] |  |
| P-MEP-P-5833 |  | P.O of Hydraulic Metal Bollards | 2d | 2015-09-09 | 2015-09-10 | P-MEP-P-5823 | 397d | 0d |  | Purchase Order [20 h] |  |
| P-MEP-P-5843 |  | Lead Time & Delivery of Hydraulic Metal Bollards | 120d | 2015-09-11 | 2016-01-08 | P-MEP-P-5833 | 479d | 396d | * JWM - 7 Days per week with no holidays | Lead Time & Delivery [600 h] |  |
|  | 24 | **Furniture** |  | 2015-08-29 | 2016-06-08 |  |  |  |  |  |  |
|  | 1 | **Lockers** |  | 2015-08-29 | 2016-01-28 |  |  |  |  |  |  |
| P-AF-B-1933 |  | Material Submittals of Lockers | 14d | 2015-08-29 | 2015-09-13 | PQ-CS-C-732 | 269d | 0d |  | Material Submittals [60 h] |  |
| P-AF-B-1943 |  | Material review & Approval of Lockers | 14d | 2015-09-09 | 2015-09-28 | P-AF-B-1933 SS+10d, P-AF-B-1933 FF+10d | 378d | 0d |  | Material Approval [40 h] |  |
| P-AF-B-1953 |  | P.O of Lockers | 2d | 2015-09-29 | 2015-09-30 | P-AF-B-1943 | 378d | 0d |  | Purchase Order [20 h] |  |
| P-AF-B-1963 |  | Lead Time & Delivery of Lockers | 120d | 2015-10-01 | 2016-01-28 | P-AF-B-1953 | 453d | 276d | * JWM - 7 Days per week with no holidays | Lead Time & Delivery [600 h] |  |
|  | 2 | **Countertop units** |  | 2015-09-14 | 2016-02-14 |  |  |  |  |  |  |
| P-AF-B-1973 |  | Material Submittals of Countertop units | 14d | 2015-09-14 | 2015-10-03 | P-AF-B-1933 | 269d | 0d |  | Material Submittals [60 h] |  |
| P-AF-B-1983 |  | Material review & Approval of Countertop units | 14d | 2015-09-29 | 2015-10-14 | P-AF-B-1973 SS+10d, P-AF-B-1973 FF+10d | 369d | 0d |  | Material Approval [40 h] |  |
| P-AF-B-1993 |  | P.O of Countertop units | 2d | 2015-10-15 | 2015-10-17 | P-AF-B-1983 | 369d | 0d |  | Purchase Order [20 h] |  |
| P-AF-B-2003 |  | Lead Time & Delivery of Countertop units | 120d | 2015-10-18 | 2016-02-14 | P-AF-B-1993 | 442d | 259d | * JWM - 7 Days per week with no holidays | Lead Time & Delivery [600 h] |  |
|  | 3 | **Janitor's closet** |  | 2015-10-04 | 2016-03-01 |  |  |  |  |  |  |
| P-AF-B-2013 |  | Material Submittals of Janitor CLoset | 14d | 2015-10-04 | 2015-10-19 | P-AF-B-1973 | 269d | 0d |  | Material Submittals [60 h] |  |
| P-AF-B-2023 |  | Material review & Approval of Janitor CLoset | 14d | 2015-10-15 | 2015-10-31 | P-AF-B-2013 SS+10d, P-AF-B-2013 FF+10d | 360d | 0d |  | Material Approval [40 h] |  |
| P-AF-B-2033 |  | P.O of Janitor CLoset | 2d | 2015-11-01 | 2015-11-02 | P-AF-B-2023 | 360d | 0d |  | Purchase Order [20 h] |  |
| P-AF-B-2043 |  | Lead Time & Delivery of Janitor CLoset | 120d | 2015-11-03 | 2016-03-01 | P-AF-B-2033 | 432d | 243d | * JWM - 7 Days per week with no holidays | Lead Time & Delivery [600 h] |  |

Notes:
- P-MEP-P-5773: Expenses: B 18296.1
- P-MEP-P-5783: Expenses: B 18296.1

| ID | WBS | Activity | Duration | Start | Finish | Predecessors | Total float | Free float | Calendar | Resources |
| --- | --- | --- | --- | --- | --- | --- | --- | --- | --- | --- |
|  | 4 | **Shoe Racks** |  | 2015-10-20 | 2016-03-17 |  |  |  |  |  |
| P-AF-B-2053 |  | Material Submittals of Shoe Racks | 14d | 2015-10-20 | 2015-11-04 | P-AF-B-2013 | 269d | 0d |  | Material Submittals [60 h] |
| P-AF-B-2063 |  | Material review & Approval of Shoe Racks | 14d | 2015-11-01 | 2015-11-16 | P-AF-B-2053 SS+10d, P-AF-B-2053 FF+10d | 357d | 0d |  | Material Approval [40 h] |
| P-AF-B-2073 |  | P.O of Shoe Racks | 2d | 2015-11-17 | 2015-11-18 | P-AF-B-2063 | 357d | 0d |  | Purchase Order [20 h] |
| P-AF-B-2083 |  | Lead Time & Delivery of Shoe Racks | 120d | 2015-11-19 | 2016-03-17 | P-AF-B-2073 | 428d | 227d | * JWM - 7 Days per week with no holidays | Lead Time & Delivery [600 h] |
|  | 5 | **Wood veneer dining table** |  | 2015-11-05 | 2016-04-03 |  |  |  |  |  |
| P-AF-B-2093 |  | Material Submittals of Wooden Veneer dining table | 14d | 2015-11-05 | 2015-11-21 | P-AF-B-2053 | 269d | 0d |  | Material Submittals [60 h] |
| P-AF-B-2103 |  | Material review & Approval of Wooden Veneer dining table | 14d | 2015-11-17 | 2015-12-02 | P-AF-B-2093 SS+10d, P-AF-B-2093 FF+10d | 347d | 0d |  | Material Approval [40 h] |
| P-AF-B-2113 |  | P.O of Wooden Veneer dining table | 2d | 2015-12-03 | 2015-12-05 | P-AF-B-2103 | 347d | 0d |  | Purchase Order [20 h] |
| P-AF-B-2123 |  | Lead Time & Delivery of Wooden Veneer dining table | 120d | 2015-12-06 | 2016-04-03 | P-AF-B-2113 | 416d | 210d | * JWM - 7 Days per week with no holidays | Lead Time & Delivery [600 h] |
|  | 6 | **Polypropylene stackable dining chair** |  | 2015-11-22 | 2016-04-20 |  |  |  |  |  |
| P-AF-B-2133 |  | Material Submittals of Polyropylene dining chair | 14d | 2015-11-22 | 2015-12-07 | P-AF-B-2093 | 269d | 0d |  | Material Submittals [60 h] |
| P-AF-B-2143 |  | Material review & Approval of Polyropylene dining chair | 14d | 2015-12-03 | 2015-12-20 | P-AF-B-2133 SS+10d, P-AF-B-2133 FF+10d | 345d | 0d |  | Material Approval [40 h] |
| P-AF-B-2153 |  | P.O of Polyropylene dining chair | 2d | 2015-12-21 | 2015-12-22 | P-AF-B-2143 | 345d | 0d |  | Purchase Order [20 h] |
| P-AF-B-2163 |  | Lead Time & Delivery of Polyropylene dining chair | 120d | 2015-12-23 | 2016-04-20 | P-AF-B-2153 | 413d | 193d | * JWM - 7 Days per week with no holidays | Lead Time & Delivery [600 h] |
|  | 7 | **Bar Stools** |  | 2015-12-08 | 2016-05-06 |  |  |  |  |  |
| P-AF-B-2213 |  | Material Submittals of Bar Stools | 14d | 2015-12-08 | 2015-12-24 | P-AF-B-2133 | 269d | 0d |  | Material Submittals [60 h] |
| P-AF-B-2223 |  | Material review & Approval of Bar Stools | 14d | 2015-12-21 | 2016-01-05 | P-AF-B-2213 SS+10d, P-AF-B-2213 FF+10d | 331d | 0d |  | Material Approval [40 h] |
| P-AF-B-2233 |  | P.O of Bar Stools | 2d | 2016-01-06 | 2016-01-07 | P-AF-B-2223 | 331d | 0d |  | Purchase Order [20 h] |
| P-AF-B-2243 |  | Lead Time & Delivery of Bar Stools | 120d | 2016-01-08 | 2016-05-06 | P-AF-B-2233 | 397d | 177d | * JWM - 7 Days per week with no holidays | Lead Time & Delivery [600 h] |
|  | 8 | **Pantry Units** |  | 2015-12-26 | 2016-05-23 |  |  |  |  |  |
| P-AF-B-2173 |  | Material Submittals of Pantry Units | 14d | 2015-12-26 | 2016-01-10 | P-AF-B-2213 | 269d | 0d |  | Material Submittals [60 h] |
| P-AF-B-2183 |  | Material review & Approval of Pantry Units | 14d | 2016-01-06 | 2016-01-21 | P-AF-B-2173 SS+10d, P-AF-B-2173 FF+10d | 280d | 0d |  | Material Approval [40 h] |
| P-AF-B-2193 |  | P.O of Pantry Units | 2d | 2016-01-23 | 2016-01-24 | P-AF-B-2183 | 280d | 0d |  | Purchase Order [20 h] |
| P-AF-B-2203 |  | Lead Time & Delivery of Pantry Units | 120d | 2016-01-25 | 2016-05-23 | P-AF-B-2193 | 337d | 160d | * JWM - 7 Days per week with no holidays | Lead Time & Delivery [600 h] |

| ID | WBS | Activity | Duration | Start | Finish | Predecessors | Total float | Free float | Calendar | Resources | Cost |
| --- | --- | --- | --- | --- | --- | --- | --- | --- | --- | --- | --- |
|  | 9 | **Office furniture** |  | 2016-01-11 | 2016-06-08 |  |  |  |  |  |  |
| P-AF-B-2253 |  | Material Submittals of Office Furniture | 14d | 2016-01-11 | 2016-01-26 | P-AF-B-2173 | 269d | 0d |  | Material Submittals [60 h] |  |
| P-AF-B-2263 |  | Material review & Approval of Office Furniture | 14d | 2016-01-23 | 2016-02-07 | P-AF-B-2253 SS+10d, P-AF-B-2253 FF+10d | 269d | 0d |  | Material Approval [40 h] |  |
| P-AF-B-2273 |  | P.O of Office Furniture | 2d | 2016-02-08 | 2016-02-09 | P-AF-B-2263 | 269d | 0d |  | Purchase Order [20 h] |  |
| P-AF-B-2283 |  | Lead Time & Delivery of Office Furniture | 120d | 2016-02-10 | 2016-06-08 | P-AF-B-2273 | 324d | 144d | * JWM - 7 Days per week with no holidays | Lead Time & Delivery [600 h] |  |
|  | 6 | **Construction** |  | 2014-10-22 | 2017-05-23 |  |  |  |  |  |  |
|  | 1 | **Civil/Structural** |  | 2014-10-22 | 2016-04-20 |  |  |  |  |  |  |
|  | 1 | **Sub-Structure** |  | 2014-10-22 | 2016-01-24 |  |  |  |  |  |  |
|  | 6 | **Area A - Tower Area** |  | 2014-10-22 | 2015-12-10 |  |  |  |  |  |  |
|  | 5 | **Surface Preparation** |  | 2014-10-22 | 2014-11-11 |  |  |  |  |  |  |
| C-CS-Su-001 |  | Blinding works at B4 & B3 - Area A | 7d | 2014-10-22 | 2014-10-29 | C-CS-Su-003 FF+2d, G-CD-005, G-CD-004, G-CD-006, SD-CS-B3-32 SS | 1d | 0d |  |  | 249,485.53 |
| C-CS-Su-003 |  | Surface Preparation at B4 & B3 - Area A | 5d | 2014-10-22 | 2014-10-27 | G-CM-001, MS-CS-C-112 SS, G-CD-006, G-CD-001, G-CD-005, M-TF-013 FF, SD-CS-B3-32 SS | 1d | 0d |  |  | 39,519.64 |
| C-CS-Su-002 |  | Protection works & Waterproofing (E-poxy) to piles at B4 & B3 - Area A | 17d | 2014-10-23 | 2014-11-11 | SD-CS-B3-32 SS, MS-CS-C-132 SS, C-CS-Su-001 SS | 0d |  |  |  | 326,288.58 |
| C-CS-Su-005 |  | Horizontal Waterproofing at B4 & B3 - Area A | 8d | 2014-10-25 | 2014-11-02 | P-CS-C-83, C-CS-Su-001 SS+1d | 0d |  |  |  | 394,887.63 |
| C-CS-Su-011 |  | Installation of Grounding, Bonding, Lightning & Earthing Protection system within the ground | 4d | 2014-11-06 | 2014-11-10 | C-CS-Su-001 SS, P-MEP-E-4683 SS+1d | 1d | 0d | *APB - 6 D week + Qatar Holiday |  | 552,451.67 |
|  | 10 | **Lower Raft - Lift Pit at level -16.20 m** |  | 2014-10-27 | 2014-11-23 |  |  |  |  |  |  |
|  | 12 | **Area A - 1** |  | 2014-10-27 | 2014-11-23 |  |  |  |  |  |  |
| C-CS-Su-1004 |  | Shoring (Block Work) & water proofing works B4 to B3 at Area A 1 (level: -16.20 m to -12.90) | 6d | 2014-10-27 | 2014-11-02 | C-CS-Su-001 SS, P-CS-C-243 | 0d |  |  |  | 303,977.12 |
| C-CS-Su-1005 |  | FRC Raft Works - Lower Raft at Area A1 (level: -16.20m) | 8d | 2014-11-03 | 2014-11-11 | C-CS-Su-1004, G-CD-001, C-CS-Su-005, PQ-CS-C-172, P-CS-C-3 FF+1d, P-CS-SR-53, SD-CS-B3-12 SS+6d | 0d |  |  |  | 1,321,733.2 |
| C-CS-Su-1006 |  | FRC Core Walls Basement 4 to Basement 3 floor level - Lower Raft at Area A1 (level: -16.20 m to -12.90m) | 6d | 2014-11-12 | 2014-11-18 | C-CS-Su-1005 | 0d |  |  |  | 1,606,616.55 |
| C-CS-Su-1007 |  | Backfilling works - Lower Raft at Area A 1 (level: -16.20 m to -12.90m) | 4d | 2014-11-19 | 2014-11-23 | C-CS-Su-1006 | 0d |  |  |  | 1,198,027.16 |
|  | 1 | **Basement 3 - Raft / Columns / Walls** |  | 2014-11-06 | 2014-12-15 |  |  |  |  |  |  |
|  | 13 | **Area A - 2** |  | 2014-11-06 | 2014-12-14 |  |  |  |  |  |  |
| C-CS-Su-1008 |  | Shoring (Block Work) & Hoizontal/ Vertical water proofing works | 5d | 2014-11-06 | 2014-11-11 | C-CS-Su-1004 SS+5d, C-CS-Su-011 FF, C-CS-Su-002 FF | 0d |  |  |  | 218,633.54 |
| C-CS-Su-1009 |  | FRC Raft Works at Area A-2 - (level: -12.90m) | 13d | 2014-11-12 | 2014-11-26 | C-CS-Su-1008 | 0d |  |  |  | 1,333,440.13 |
| C-CS-Su-1010 |  | FRC Walls & Columns at Area A-2 - (level: -12.90m to -9.30m) | 15d | 2014-11-27 | 2014-12-14 | C-CS-Su-1009, M-ME-001, C-MEP-Em-001 SS | 3d |  |  |  | 181,962.57 |
| C-CS-Su-1011 |  | FRC Retaining Walls at Area A-2 - (level: -12.90m to -9.30m) | 15d | 2014-11-27 | 2014-12-14 | C-CS-Su-1009, C-MEP-Em-001 SS | 3d |  |  |  | 399,094.41 |

Notes:
- C-CS-Su-001: Expenses: C 249486
- C-CS-Su-003: Expenses: C 39519.6
- C-CS-Su-002: Expenses: D,E,F &G 45740.3; C 58547.6; w 222001
- C-CS-Su-005: Expenses: w 394888
- C-CS-Su-011: Expenses: 1 552452
- C-CS-Su-1004: Expenses: 1 303977
- C-CS-Su-1005: Expenses: 1 1321733
- C-CS-Su-1006: Expenses: 1 1606617
- C-CS-Su-1007: Expenses: 1 1198027
- C-CS-Su-1008: Expenses: 1 185011; 2 33622.7
- C-CS-Su-1009: Expenses: 1 1333440
- C-CS-Su-1010: Expenses: 1 181963
- C-CS-Su-1011: Expenses: 1 399094

| ID | WBS | Activity | Duration | Start | Finish | Predecessors | Total float | Free float | Calendar | Cost |
| --- | --- | --- | --- | --- | --- | --- | --- | --- | --- | --- |
|  | 14 | **Area A - 3** |  | 2014-11-08 | 2014-12-06 |  |  |  |  |  |
| C-CS-Su-1012 |  | Shoring (Block Work) & water proofing works at A-3 (level -12.90 m) | 5d | 2014-11-08 | 2014-11-12 | C-CS-Su-1004 SS+10d, C-CS-Su-011 FF, C-CS-Su-002 FF | 4d |  | *APB - 6 D week + Qatar Holiday |  |
| C-CS-Su-1013 |  | FRC Raft Works - Raft at Area A -3 | 8d | 2014-11-18 | 2014-11-26 | C-CS-Su-1007 FF+3d, C-CS-Su-1012 | 0d |  |  | 2,491,113.54 |
| C-CS-Su-1014 |  | FRC Walls & Columns at Area A - 3 - (level: -12.90m to -9.30m) | 8d | 2014-11-27 | 2014-12-06 | C-CS-Su-1013, M-ME-001 | 10d |  |  | 339,939.85 |
|  | 15 | **Area A - 4** |  | 2014-11-08 | 2014-12-15 |  |  |  |  |  |
| C-CS-Su-1015 |  | Shoring (Block Work) & water proofing works at Area A-4 | 5d | 2014-11-08 | 2014-11-12 | C-CS-Su-1004 SS+10d, C-CS-Su-011 FF, C-CS-Su-002 FF | 2d | 0d |  | 157,789.01 |
| C-CS-Su-1016 |  | FRC Raft Works at Area A-4 | 13d | 2014-11-13 | 2014-11-27 | C-CS-Su-1015 | 2d | 0d |  | 1,512,461.79 |
| C-CS-Su-1017 |  | FRC Walls & Columns at Area A-4 - (level: -12.90m to -9.30m) | 15d | 2014-11-29 | 2014-12-15 | C-CS-Su-1016, M-ME-1 | 2d |  |  | 206,392.05 |
| C-CS-Su-1018 |  | FRC Retaining Walls at Area A-4 - (level: -12.90m to -9.30m) | 15d | 2014-11-29 | 2014-12-15 | C-CS-Su-1016 | 2d |  |  | 288,028.6 |
|  | 2 | **Basement 2 - Slab / Columns / Walls** |  | 2014-12-20 | 2015-01-06 |  |  |  |  |  |
| C-CS-Su-A-B2-01 |  | FRC Slab Works at Basement 2 at Area A | 12d | 2014-12-20 | 2015-01-01 | P-CS-SR-293, C-CS-Su-A-CW-32 SS, C-CS-Su-B-CW-1722 SS, C-CS-Su-1011, C-CS-Su-1010, C-CS-Su-1014, C-CS-Su-1017, C-CS-Su-1018, C-CS-Su-A-GWT-101, C-CS-Su-A-GWT-161, C-CS-Su-A-GWT-201, C-CS-Su-A-GWT-241, C-CS-Su-A-GWT-281, C-CS-Su-A-GWT-321, C-CS-Su-A-GWT-361, C-CS-Su-A-GWT-401, C-CS-Su-A-GWT-381, C-CS-Su-A-GWT-181, C-CS-Su-A-GWT-141, C-CS-Su-A-GWT-121, C-CS-Su-A-GWT-221, C-CS-Su-A-GWT-261, C-CS-Su-A-GWT-301, C-CS-Su-A-GWT-341, G-MM-002 | 0d |  |  | 2,527,814.17 |
| C-CS-Su-15 |  | Plaster for seacant piles & Waterproofing B2 to B1 at Area A | 12d | 2014-12-24 | 2015-01-06 | C-CS-Su-A-B2-01 SS+4d | 0d |  |  | 359,219.98 |
| C-CS-Su-A-B2-02 |  | Columns & Wals from B2 to B1 at Area A | 12d | 2014-12-24 | 2015-01-06 | C-CS-Su-A-B2-01 SS+4d | 0d |  |  | 645,530.37 |
| C-CS-Su-A-B2-03 |  | FRC Retaining Walls from B2 to B1 at Area A | 12d | 2014-12-24 | 2015-01-06 | C-CS-Su-A-B2-01 SS+4d, C-CS-Su-15 SS | 0d |  |  | 655,721.4 |
|  | 3 | **Basement 1 - Slab / Columns / Walls** |  | 2014-12-28 | 2015-01-17 |  |  |  |  |  |
| C-CS-Su-A-B1-01 |  | FRC Slab Works at Basement 1 at Area A | 12d | 2014-12-28 | 2015-01-10 | C-CS-Su-A-B2-02 SS+3d, P-CS-SR-303, C-CS-Su-A-B2-03 SS+3d, C-CS-Su-B-CW-1712 SS | 0d |  |  | 2,527,814.17 |
| C-CS-Su-25 |  | Plaster for Seacant piles & Waterproofing B1 to Ground level | 12d | 2014-12-29 | 2015-01-11 | C-CS-Su-15 SS, C-CS-Su-A-B1-01 SS+1d | 2d | 0d |  | 359,219.98 |
| C-CS-Su-A-B1-03 |  | FRC Retaining Walls from B1 to GF at Area A | 12d | 2015-01-01 | 2015-01-14 | C-CS-Su-A-B1-01 SS+4d, C-CS-Su-25 SS+3d, C-CS-Su-A-B2-03 SS+4d | 2d |  |  | 655,721.4 |
| C-CS-Su-A-B1-02 |  | Columns & Wals from B1 to GF at Area A | 12d | 2015-01-04 | 2015-01-17 | C-CS-Su-A-B1-01 SS+6d | 0d |  |  | 645,530.37 |
|  | 4 | **Ground Floor - Slab / Columns / Walls** |  | 2015-01-07 | 2015-01-27 |  |  |  |  |  |
| C-CS-Su-A-GF-01 |  | FRC Slab Works at Ground Level at Area A | 12d | 2015-01-07 | 2015-01-20 | C-CS-Su-A-B1-02 SS+3d, P-CS-SR-313, M-ME-1 SS, C-CS-Su-A-B1-03 SS+3d, C-CS-Su-B-CW-602 SS | 0d |  |  | 2,527,814.17 |
| C-CS-Su-A-GF-02 |  | Columns & Wals from GF to MZ level at Area A | 6d | 2015-01-21 | 2015-01-27 | C-CS-Su-A-GF-01 | 0d |  |  | 1,200,757.2 |
|  | 6 | **Core Walls - Raft to Ground Floor** |  | 2014-11-27 | 2014-12-17 |  |  |  |  |  |
|  | 1 | **Core Wall A** |  | 2014-11-27 | 2014-12-17 |  |  |  |  |  |
| C-CS-Su-A-CW-01 |  | FRC Core Wall "A" from Raft level to B2 level at Area A | 6d | 2014-11-27 | 2014-12-03 | P-CS-SR-43, P-CS-C-123, PQ-CS-C-152, C-CS-Su-1006, C-CS-Su-1009, C-CS-Su-1013 | 0d |  |  | 803,308.28 |
| C-CS-Su-A-CW-02 |  | FRC Core Wall "A" from B2 level to B1 Level at Area A | 6d | 2014-12-04 | 2014-12-10 | C-CS-Su-A-CW-01, P-CS-SR-293 | 0d |  |  | 803,308.28 |
| C-CS-Su-A-CW-2 |  | FRC Core Wall "A" from B1 level to GF Level at Area A | 6d | 2014-12-11 | 2014-12-17 | C-CS-Su-A-CW-02, P-CS-SR-303 | 0d |  |  | 803,308.28 |

Notes:
- C-CS-Su-1013: Expenses: 1 2491114
- C-CS-Su-1014: Expenses: 1 339940
- C-CS-Su-1015: Expenses: 1 133523; 2 24265.7
- C-CS-Su-1016: Expenses: 1 1512462
- C-CS-Su-1017: Expenses: 1 206392
- C-CS-Su-1018: Expenses: 1 288029
- C-CS-Su-A-B2-01: Expenses: C 2527814
- C-CS-Su-15: Expenses: A,B & C 303977; w 55242.9
- C-CS-Su-A-B2-02: Expenses: C 645530
- C-CS-Su-A-B2-03: Expenses: C 655721
- C-CS-Su-A-B1-01: Expenses: C 2527814
- C-CS-Su-25: Expenses: A, B & C 303977; w 55242.9
- C-CS-Su-A-B1-03: Expenses: C 655721
- C-CS-Su-A-B1-02: Expenses: C 645530
- C-CS-Su-A-GF-01: Expenses: C 2527814
- C-CS-Su-A-GF-02: Expenses: c 1200757
- C-CS-Su-A-CW-01: Expenses: C 803308
- C-CS-Su-A-CW-02: Expenses: C 803308
- C-CS-Su-A-CW-2: Expenses: C 803308

| ID | WBS | Activity | Duration | Start | Finish | Predecessors | Total float | Free float | Cost |
| --- | --- | --- | --- | --- | --- | --- | --- | --- | --- |
|  | 2 | **Core Walll B** |  | 2014-11-27 | 2014-12-17 |  |  |  |  |
| C-CS-Su-A-CW-12 |  | FRC Core Wall "B" from Raft level to B2 level at Area A | 6d | 2014-11-27 | 2014-12-03 | C-CS-Su-A-CW-01 SS, P-CS-SR-43, P-CS-C-123 | 0d |  | 803,308.28 |
| C-CS-Su-A-CW-22 |  | FRC Core Wall "B" from B2 level to B1 Level at Area A | 6d | 2014-12-04 | 2014-12-10 | C-CS-Su-A-CW-12, C-CS-Su-A-CW-02 SS, P-CS-SR-293 | 0d |  | 803,308.28 |
| C-CS-Su-A-CW-32 |  | FRC Core Wall "B" from B1 level to GF Level at Area A | 6d | 2014-12-11 | 2014-12-17 | C-CS-Su-A-CW-22, C-CS-Su-A-CW-2 SS, P-CS-SR-303 | 0d |  | 803,308.28 |
|  | 7 | **Ramp** |  | 2015-02-25 | 2015-03-25 |  |  |  |  |
| C-CS-Su-A-R-001 |  | FRC Ramp Slab from Basement 1 to Ground FLoor at the west side at Area A | 25d | 2015-02-25 | 2015-03-25 | C-CS-Su-A-GF-01, C-CS-GF-21 | 205d | 51d | 300,825.18 |
|  | 8 | **Stairs Steps & Landing** |  | 2015-02-11 | 2015-05-03 |  |  |  |  |
|  | 2 | **Stair # 2** |  | 2015-02-11 | 2015-02-28 |  |  |  |  |
| C-CS-Su-A-S2-21 |  | FRC Stair steps & Landing from B3 to B2 at Area A | 5d | 2015-02-11 | 2015-02-16 | C-CS-Su-B-CW-652 SS | 101d | 0d | 15,624.49 |
| C-CS-Su-A-S2-31 |  | FRC Stair steps & Landing from B2 to B1 at Area A | 5d | 2015-02-17 | 2015-02-22 | C-CS-Su-A-S2-21 | 101d | 0d | 15,624.49 |
| C-CS-Su-A-S2-41 |  | FRC Stair steps & Landing from B1 to GF at Area A | 5d | 2015-02-23 | 2015-02-28 | C-CS-Su-A-S2-31 | 101d | 7d | 15,624.49 |
|  | 1 | **Stair # 3** |  | 2015-02-17 | 2015-03-30 |  |  |  |  |
| C-CS-Su-A-S3-001 |  | FRC Stair steps & Landing from B3 to B2 at Area A | 12d | 2015-02-17 | 2015-03-02 | C-CS-Su-B-CW-612, C-CS-Su-A-S2-21 | 177d | 0d | 15,624.49 |
| C-CS-Su-A-S3-1 |  | FRC Stair steps & Landing from B2 to B1 at Area A | 12d | 2015-03-03 | 2015-03-16 | C-CS-Su-A-S3-001, C-CS-Su-A-S2-31 | 177d | 0d | 15,624.49 |
| C-CS-Su-A-S3-11 |  | FRC Stair steps & Landing from B1 to GF at Area A | 12d | 2015-03-17 | 2015-03-30 | C-CS-Su-A-S3-1, C-CS-Su-A-S2-41 | 177d | 5d | 15,624.49 |
|  | 3 | **Stair # 4** |  | 2015-03-09 | 2015-04-19 |  |  |  |  |
| C-CS-Su-A-S4-51 |  | FRC Stair steps & Landing from B3 to B2 at Area A | 12d | 2015-03-09 | 2015-03-22 | C-CS-S-L3-22, C-CS-Su-A-S3-001 | 172d | 0d | 15,624.49 |
| C-CS-Su-A-S4-61 |  | FRC Stair steps & Landing from B2 to B1 at Area A | 12d | 2015-03-23 | 2015-04-05 | C-CS-Su-A-S4-51, C-CS-Su-A-S3-1 | 172d | 0d | 15,624.49 |
| C-CS-Su-A-S4-71 |  | FRC Stair steps & Landing from B1 to GF at Area A | 12d | 2015-04-06 | 2015-04-19 | C-CS-Su-A-S4-61, C-CS-Su-A-S3-11 | 172d | 0d | 15,624.49 |
|  | 4 | **Stair # 5** |  | 2015-03-23 | 2015-05-03 |  |  |  |  |
| C-CS-Su-A-S5-81 |  | FRC Stair steps & Landing from B3 to B2 at Area A | 12d | 2015-03-23 | 2015-04-05 | C-CS-S-L3-22, C-CS-Su-A-S4-51 | 172d | 0d | 15,624.49 |
| C-CS-Su-A-S5-91 |  | FRC Stair steps & Landing from B2 to B1 at Area A | 12d | 2015-04-06 | 2015-04-19 | C-CS-Su-A-S5-81, C-CS-Su-A-S4-61 | 172d | 0d | 15,624.49 |
| C-CS-Su-A-S5-101 |  | FRC Stair steps & Landing from B1 to GF at Area A | 12d | 2015-04-20 | 2015-05-03 | C-CS-Su-A-S5-91, C-CS-Su-A-S4-71 | 172d | 18d | 15,624.49 |
|  | 9 | **Tanks** |  | 2014-11-29 | 2015-06-16 |  |  |  |  |
|  | 1 | **Gray Water Tank** |  | 2014-11-29 | 2015-01-03 |  |  |  |  |
| C-CS-Su-A-GWT-101 |  | FRC Walls at Gray Water Tank | 10d | 2014-11-29 | 2014-12-09 | C-CS-Su-1009, C-CS-Su-1016 | 2d | 0d | 209,538.83 |
| C-CS-Su-A-GWT-121 |  | Installarion of Grating & MEP Sleeves at Gray Water Tank | 8d | 2014-12-01 | 2014-12-09 | C-CS-Su-A-GWT-101 SS+2d | 7d | 0d | 28,484.12 |
| C-CS-Su-A-GWT-111 |  | Horizontal & Vertical Waterproofing & Testing at Gray Water Tank | 20d | 2014-12-10 | 2015-01-03 | C-CS-Su-A-GWT-121 | 242d | 0d | 28,829.21 |

Notes:
- C-CS-Su-A-CW-12: Expenses: C 803308
- C-CS-Su-A-CW-22: Expenses: C 803308
- C-CS-Su-A-CW-32: Expenses: C 803308
- C-CS-Su-A-R-001: Expenses: C 300825
- C-CS-Su-A-S2-21: Expenses: C 15624.5
- C-CS-Su-A-S2-31: Expenses: C 15624.5
- C-CS-Su-A-S2-41: Expenses: C 15624.5
- C-CS-Su-A-S3-001: Expenses: C 15624.5
- C-CS-Su-A-S3-1: Expenses: C 15624.5
- C-CS-Su-A-S3-11: Expenses: C 15624.5
- C-CS-Su-A-S4-51: Expenses: C 15624.5
- C-CS-Su-A-S4-61: Expenses: C 15624.5
- C-CS-Su-A-S4-71: Expenses: C 15624.5
- C-CS-Su-A-S5-81: Expenses: C 15624.5
- C-CS-Su-A-S5-91: Expenses: C 15624.5
- C-CS-Su-A-S5-101: Expenses: C 15624.5
- C-CS-Su-A-GWT-101: Expenses: C 209539
- C-CS-Su-A-GWT-121: Expenses: G 2651.11; 2 25833
- C-CS-Su-A-GWT-111: Expenses: W 18821.2; P 10008

| ID | WBS | Activity | Duration | Start | Finish | Predecessors | Total float | Free float | Cost |
| --- | --- | --- | --- | --- | --- | --- | --- | --- | --- |
|  | 2 | **Main Treated Water Tank 1** |  | 2014-11-30 | 2015-01-26 |  |  |  |  |
| C-CS-Su-A-GWT-161 |  | FRC Walls at Main Treated water tank 1 | 10d | 2014-11-30 | 2014-12-10 | C-CS-Su-A-GWT-101 SS+1d, C-CS-Su-1016 | 2d | 0d | 209,538.83 |
| C-CS-Su-A-GWT-141 |  | Installarion of Grating & MEP Sleeves at Main Treated water tank 1 | 8d | 2014-12-02 | 2014-12-10 | C-CS-Su-A-GWT-161 SS+2d | 6d |  | 28,484.12 |
| C-CS-Su-A-GWT-171 |  | Horizontal & Vertical Waterproofing & Testing at Main Treated water tank 1 | 20d | 2015-01-04 | 2015-01-26 | C-CS-Su-A-GWT-141, C-CS-Su-A-GWT-111 | 242d | 0d | 28,829.21 |
|  | 3 | **Main Treated Water Tank 2** |  | 2014-12-01 | 2015-02-19 |  |  |  |  |
| C-CS-Su-A-GWT-201 |  | FRC Walls at Main Treated water tank 2 | 10d | 2014-12-01 | 2014-12-11 | C-CS-Su-A-GWT-161 SS+1d, C-CS-Su-1016 | 2d | 0d | 209,538.83 |
| C-CS-Su-A-GWT-181 |  | Installarion of Grating & MEP Sleeves at Main Treated water tank 2 | 8d | 2014-12-03 | 2014-12-11 | C-CS-Su-A-GWT-201 SS+2d | 5d |  | 28,484.12 |
| C-CS-Su-A-GWT-211 |  | Horizontal & Vertical Waterproofing & Testing at Main Treated water tank 2 | 20d | 2015-01-27 | 2015-02-19 | C-CS-Su-A-GWT-181, C-CS-Su-A-GWT-171 | 242d | 0d | 28,829.21 |
|  | 4 | **Domestic Water Tank 1** |  | 2014-12-02 | 2015-03-15 |  |  |  |  |
| C-CS-Su-A-GWT-241 |  | FRC Walls at Domestic water tank 1 | 10d | 2014-12-02 | 2014-12-13 | C-CS-Su-A-GWT-201 SS+1d, C-CS-Su-1013 | 2d | 0d | 209,538.83 |
| C-CS-Su-A-GWT-221 |  | Installarion of Grating & MEP Sleeves at Domestic water tank 1 | 8d | 2014-12-04 | 2014-12-13 | C-CS-Su-A-GWT-241 SS+2d | 4d |  | 28,484.12 |
| C-CS-Su-A-GWT-251 |  | Horizontal & Vertical Waterproofing & Testing at Domestic water tank 1 | 20d | 2015-02-21 | 2015-03-15 | C-CS-Su-A-GWT-221, C-CS-Su-A-GWT-211 | 242d | 0d | 28,829.21 |
|  | 5 | **Domestic Water Tank 2** |  | 2014-12-03 | 2015-04-07 |  |  |  |  |
| C-CS-Su-A-GWT-281 |  | FRC Walls at Domestic water tank 2 | 10d | 2014-12-03 | 2014-12-14 | C-CS-Su-A-GWT-241 SS+1d, C-CS-Su-1013 | 2d | 0d | 209,538.83 |
| C-CS-Su-A-GWT-261 |  | Installarion of Grating & MEP Sleeves at Domestic water tank 2 | 8d | 2014-12-06 | 2014-12-14 | C-CS-Su-A-GWT-281 SS+2d | 3d |  | 28,484.12 |
| C-CS-Su-A-GWT-291 |  | Horizontal & Vertical Waterproofing & Testing at Domestic water tank 2 | 20d | 2015-03-16 | 2015-04-07 | C-CS-Su-A-GWT-261, C-CS-Su-A-GWT-251 | 242d | 0d | 28,829.21 |
|  | 6 | **Break Water tank 1** |  | 2014-12-04 | 2015-04-30 |  |  |  |  |
| C-CS-Su-A-GWT-321 |  | FRC Walls at Break water tank 1 | 10d | 2014-12-04 | 2014-12-15 | C-CS-Su-A-GWT-281 SS+1d, C-CS-Su-1013 | 2d | 0d | 209,538.83 |
| C-CS-Su-A-GWT-301 |  | Installarion of Grating & MEP Sleeves at Break water tank 1 | 8d | 2014-12-07 | 2014-12-15 | C-CS-Su-A-GWT-321 SS+2d | 2d |  | 28,484.12 |
| C-CS-Su-A-GWT-331 |  | Horizontal & Vertical Waterproofing & Testing at Break water tank 1 | 20d | 2015-04-08 | 2015-04-30 | C-CS-Su-A-GWT-301, C-CS-Su-A-GWT-291 | 242d | 0d | 28,829.21 |
|  | 7 | **Break Water tank 2** |  | 2014-12-04 | 2015-05-24 |  |  |  |  |
| C-CS-Su-A-GWT-361 |  | FRC Walls at Break water tank 2 | 10d | 2014-12-04 | 2014-12-15 | C-CS-Su-A-GWT-321 SS, C-CS-Su-1013 | 2d | 0d | 209,538.83 |
| C-CS-Su-A-GWT-341 |  | Installarion of Grating & MEP Sleeves at Break water tank 2 | 8d | 2014-12-07 | 2014-12-15 | C-CS-Su-A-GWT-361 SS+2d | 2d |  | 28,484.12 |
| C-CS-Su-A-GWT-371 |  | Horizontal & Vertical Waterproofing & Testing at Break water tank 2 | 20d | 2015-05-02 | 2015-05-24 | C-CS-Su-A-GWT-341, C-CS-Su-A-GWT-331 | 242d | 0d | 28,829.21 |

Notes:
- C-CS-Su-A-GWT-161: Expenses: C 209539
- C-CS-Su-A-GWT-141: Expenses: G 2651.11; 2 25833
- C-CS-Su-A-GWT-171: Expenses: W 18821.2; P 10008
- C-CS-Su-A-GWT-201: Expenses: C 209539
- C-CS-Su-A-GWT-181: Expenses: G 2651.11; 2 25833
- C-CS-Su-A-GWT-211: Expenses: W 18821.2; P 10008
- C-CS-Su-A-GWT-241: Expenses: C 209539
- C-CS-Su-A-GWT-221: Expenses: G 2651.11; 2 25833
- C-CS-Su-A-GWT-251: Expenses: W 18821.2; P 10008
- C-CS-Su-A-GWT-281: Expenses: C 209539
- C-CS-Su-A-GWT-261: Expenses: G 2651.11; 2 25833
- C-CS-Su-A-GWT-291: Expenses: W 18821.2; P 10008
- C-CS-Su-A-GWT-321: Expenses: C 209539
- C-CS-Su-A-GWT-301: Expenses: G 2651.11; 2 25833
- C-CS-Su-A-GWT-331: Expenses: W 18821.2; P 10008
- C-CS-Su-A-GWT-361: Expenses: C 209539
- C-CS-Su-A-GWT-341: Expenses: G 2651.11; 2 25833
- C-CS-Su-A-GWT-371: Expenses: W 18821.2; P 10008

| ID | WBS | Activity | Duration | Start | Finish | Predecessors | Total float | Free float | Calendar | Cost |
| --- | --- | --- | --- | --- | --- | --- | --- | --- | --- | --- |
|  | 8 | **RO Water Tank** |  | 2014-12-04 | 2015-06-16 |  |  |  |  |  |
| C-CS-Su-A-GWT-401 |  | FRC Walls at RO water tank | 10d | 2014-12-04 | 2014-12-15 | C-CS-Su-A-GWT-361 SS | 2d | 0d |  | 209,538.83 |
| C-CS-Su-A-GWT-381 |  | Installarion of Grating & MEP Sleeves at RO water tank | 8d | 2014-12-07 | 2014-12-15 | C-CS-Su-A-GWT-401 SS+2d | 2d |  |  | 28,484.12 |
| C-CS-Su-A-GWT-411 |  | Horizontal & Vertical Waterproofing & Testing at RO water tank | 20d | 2015-05-25 | 2015-06-16 | C-CS-Su-A-GWT-381, C-CS-Su-A-GWT-371 | 242d | 0d |  | 28,829.21 |
|  | 11 | **Pedestrian Ramp** |  | 2015-01-24 | 2015-02-23 |  |  |  |  |  |
| C-CS-Su-A-PR-001 |  | FRC Pedestrian Ramp at B3 | 10d | 2015-01-24 | 2015-02-03 | C-CS-B3-01 | 357d | 261d | *APB - 6 D week + Qatar Holiday | 14,730.58 |
| C-CS-Su-A-PR-002 |  | FRC Pedestrian Ramp at B2 | 10d | 2015-02-01 | 2015-02-12 | C-CS-B2-1 | 375d | 280d | *APB - 6 D week + Qatar Holiday | 14,730.58 |
| C-CS-Su-A-PR-003 |  | FRC Pedestrian Ramp at B1 | 10d | 2015-02-12 | 2015-02-23 | C-CS-B1-11 | 339d | 297d | *APB - 6 D week + Qatar Holiday | 14,730.58 |
|  | 12 | **Manholes, Sump Pits & Trenches** |  | 2014-10-30 | 2015-12-10 |  |  |  |  |  |
| C-MEP-MSP-11 |  | Blinding for Manholes, Sump Pits & Trenches at Area A | 25d | 2014-10-30 | 2014-11-27 | C-CS-Su-001 | 58d | 0d |  | 56,776.69 |
| C-MEP-MSP-21 |  | Block work for Manholes, Sump Pits & Trenches at Area A | 25d | 2014-11-29 | 2014-12-28 | C-MEP-MSP-11 | 83d | 0d |  | 56,776.69 |
| C-MEP-MSP-31 |  | FRC Concrete Base & Concrete Splay for Manholes, Sump Pits & Trenchesat Area A | 25d | 2014-12-29 | 2015-01-26 | C-MEP-MSP-21 | 83d | 0d |  | 113,553.38 |
| C-MEP-MSP-51 |  | Installation of rendering & e-poxy for Manholes, Sump Pits & Trenches at Area A | 25d | 2015-01-27 | 2015-02-25 | C-MEP-MSP-31 | 83d | 25d |  | 17,033.01 |
| C-MEP-MSP-41 |  | Installation of Drainage pipes, valves for Manholes, Sump Pits & Trenches at Area A | 25d | 2015-10-14 | 2015-11-11 | C-MEP-MSP-51, P-MEP-P-2923 | 210d | 0d |  | 28,388.35 |
| C-MEP-MSP-61 |  | Installation of Ductile Iron cover for the sump pits at Area A | 25d | 2015-11-12 | 2015-12-10 | C-MEP-MSP-41 | 284d | 274d |  | 11,355.34 |
|  | 7 | **Area B - Car Park Area** |  | 2014-11-04 | 2016-01-10 |  |  |  |  |  |
|  | 5 | **Surface Preparation** |  | 2014-11-04 | 2014-12-20 |  |  |  |  |  |
| C-CS-Su-B-003 |  | Surface Preparation at B3 - Area B | 12d | 2014-11-04 | 2014-11-17 | C-CS-Su-002 FF, MS-CS-C-132 | 76d | 0d |  | 39,519.64 |
| C-CS-Su-B-001 |  | Blinding works at B3 - Area B | 12d | 2014-11-06 | 2014-11-19 | C-CS-Su-001, C-CS-Su-B-003 FF+2d | 76d | 0d |  | 249,485.53 |
| C-CS-Su-1028 |  | Installation of Grounding, Bonding, Lightning & Earthing Protection system within the ground | 25d | 2014-11-11 | 2014-12-09 | C-CS-Su-011 | 69d | 0d | *APB - 6 D week + Qatar Holiday | 552,451.67 |
| C-CS-Su-B-002 |  | Protection works & Waterproofing (E-poxy) to piles at B3 -Area B | 25d | 2014-11-20 | 2014-12-20 | C-CS-Su-003, C-CS-Su-B-001 | 76d | 7d |  | 326,288.58 |
| C-CS-Su-B-005 |  | Horizontal Waterproofing at B3 - Area B | 12d | 2014-11-20 | 2014-12-03 | C-CS-Su-005, P-CS-C-83, C-CS-Su-B-001 | 99d | 20d |  | 394,887.63 |
|  | 1 | **Basement 3 - Raft / Columns / Walls** |  | 2014-12-10 | 2015-04-19 |  |  |  |  |  |
|  | 13 | **Area B - 1** |  | 2014-12-10 | 2015-02-05 |  |  |  |  |  |
| C-CS-Su-B-101 |  | Shoring (Block Work) & Hoizontal/ Vertical water proofing works | 15d | 2014-12-10 | 2014-12-28 | C-CS-Su-1004, C-CS-Su-B-002 FF, C-CS-Su-B-001, C-CS-Su-1028 | 69d | 0d |  | 118,299.39 |
| C-CS-Su-B-102 |  | FRC Raft Works at Area B-1 - (level: -12.90m) | 14d | 2014-12-29 | 2015-01-13 | C-CS-Su-B-101, C-CS-Su-B-005 | 79d | 0d |  | 1,385,519.16 |
| C-CS-Su-B-103 |  | FRC Walls & Columns at Area B-1 - (level: -12.90m to -9.30m) | 20d | 2015-01-14 | 2015-02-05 | C-CS-Su-B-102, M-ME-11 | 101d | 5d |  | 189,069.33 |
| C-CS-Su-B-104 |  | FRC Retaining Walls at Area B-1 - (level: -12.90m to -9.30m) | 20d | 2015-01-14 | 2015-02-05 | C-CS-Su-B-102 | 79d | 5d |  | 215,944.11 |

Notes:
- C-CS-Su-A-GWT-401: Expenses: C 209539
- C-CS-Su-A-GWT-381: Expenses: G 2651.11; 2 25833
- C-CS-Su-A-GWT-411: Expenses: W 18821.2; P 10008
- C-CS-Su-A-PR-001: Expenses: C 14730.6
- C-CS-Su-A-PR-002: Expenses: C 14730.6
- C-CS-Su-A-PR-003: Expenses: C 14730.6
- C-MEP-MSP-11: Expenses: 1 56776.7
- C-MEP-MSP-21: Expenses: 1 56776.7
- C-MEP-MSP-31: Expenses: 1 113553
- C-MEP-MSP-51: Expenses: 1 17033
- C-MEP-MSP-41: Expenses: 1 28388.3
- C-MEP-MSP-61: Expenses: 1 11355.3
- C-CS-Su-B-003: Expenses: C 39519.6
- C-CS-Su-B-001: Expenses: C 249486
- C-CS-Su-1028: Expenses: 1 552452
- C-CS-Su-B-002: Expenses: D,E,F &G 45740.3; C 58547.6; W 222001
- C-CS-Su-B-005: Expenses: w 394888
- C-CS-Su-B-101: Expenses: 1 100107; 2 18192.8
- C-CS-Su-B-102: Expenses: 1 1385519
- C-CS-Su-B-103: Expenses: 1 189069
- C-CS-Su-B-104: Expenses: 1 215944

| ID | WBS | Activity | Duration | Start | Finish | Predecessors | Total float | Free float | Calendar | Cost |
| --- | --- | --- | --- | --- | --- | --- | --- | --- | --- | --- |
|  | 14 | **Area B - 2** |  | 2014-12-29 | 2015-03-08 |  |  |  |  |  |
| C-CS-Su-B-105 |  | Shoring (Block Work) & Hoizontal/ Vertical water proofing works | 25d | 2014-12-29 | 2015-01-26 | C-CS-Su-B-101, C-CS-Su-1028, C-CS-Su-B-002 FF | 69d | 0d | *APB - 6 D week + Qatar Holiday | 115,248.68 |
| C-CS-Su-B-106 |  | FRC Raft Works - Raft at Area B -2 | 14d | 2015-01-27 | 2015-02-12 | C-CS-Su-B-105, C-CS-Su-B-102, C-CS-Su-B-005 | 74d | 0d |  | 1,360,564.63 |
| C-CS-Su-B-107 |  | FRC Walls & Columns at Area B - 2 - (level: -12.90m to -9.30m) | 8d | 2015-02-14 | 2015-02-22 | C-CS-Su-B-106, C-CS-Su-B-103, M-ME-11 | 96d | 28d |  | 185,664.01 |
| C-CS-Su-B-108 |  | FRC Retaining Walls at Area B-2 - (level: -12.90m to -9.30m) | 20d | 2015-02-14 | 2015-03-08 | C-CS-Su-B-106, C-CS-Su-B-104 | 74d | 16d | *APB - 6 D week + Qatar Holiday | 210,375.35 |
|  | 15 | **Area B - 3** |  | 2015-01-27 | 2015-04-19 |  |  |  |  |  |
| C-CS-Su-B-109 |  | Shoring (Block Work) & water proofing works at Area B--3 | 25d | 2015-01-27 | 2015-02-25 | C-CS-Su-B-105, C-CS-Su-1028, C-CS-Su-B-002 FF | 69d | 11d |  | 108,469.35 |
| C-CS-Su-B-110 |  | FRC Raft Works at Area B-3 | 14d | 2015-03-11 | 2015-03-26 | C-CS-Su-B-109, C-CS-Su-B-106, C-CS-Su-B-005, C-MEP-MSP-101 FF | 58d | 0d |  | 1,377,924.3 |
| C-CS-Su-B-1012 |  | FRC Retaining Walls at Area B-3 - (level: -12.90m to -9.30m) | 20d | 2015-03-28 | 2015-04-19 | C-CS-Su-B-108, C-CS-Su-B-110 | 58d | 0d |  | 198,000.33 |
| C-CS-Su-B-111 |  | FRC Walls & Columns at Area B- 3- (level: -12.90m to -9.30m) | 10d | 2015-03-28 | 2015-04-07 | C-CS-Su-B-110, C-CS-Su-B-107, M-ME-11 | 68d | 10d |  | 188,032.93 |
|  | 2 | **Basement 2 - Slab / Columns / Walls** |  | 2015-04-20 | 2015-05-31 |  |  |  |  |  |
| C-CS-Su-B-B2-01 |  | FRC Slab Works at Basement 2 at Area B | 12d | 2015-04-20 | 2015-05-03 | P-CS-SR-293, C-MEP-Em-012 FF, C-CS-Su-B-1012, C-CS-Su-B-111, C-CS-Su-B-108, C-CS-Su-B-107, C-CS-Su-B-104, C-CS-Su-B-103 | 58d | 0d |  | 3,364,673.86 |
| C-CS-Su-45 |  | Plaster for seacant walls & Waterproofing B2 to B1 Level at Area B | 12d | 2015-05-04 | 2015-05-17 | C-CS-Su-B-B2-01 | 58d | 0d |  | 359,219.98 |
| C-CS-Su-B-B2-02 |  | Columns & Wals from B2 to B1 at Area B | 6d | 2015-05-04 | 2015-05-10 | C-CS-Su-B-B2-01, C-MEP-Em-012 FF | 76d | 18d |  | 645,530.37 |
| C-CS-Su-B-B2-03 |  | FRC Retaining Walls from B2 to B1 at Area B | 12d | 2015-05-18 | 2015-05-31 | C-CS-Su-B-B2-01, C-MEP-Em-012 FF, C-CS-Su-45 | 58d | 0d |  | 655,721.4 |
|  | 3 | **Basement 1 - Slab / Columns / Walls** |  | 2015-06-01 | 2015-07-12 |  |  |  |  |  |
| C-CS-Su-B-B1-01 |  | FRC Slab Works at Basement 1 at Area B | 12d | 2015-06-01 | 2015-06-14 | C-CS-Su-B-B2-02, C-CS-Su-B-B2-03, P-CS-SR-303, C-MEP-Em-022 FF | 58d | 0d |  | 3,364,673.86 |
| C-CS-Su-55 |  | Plaster for seacant walls & Waterproofing up to Ground Level at Area B | 12d | 2015-06-15 | 2015-06-28 | C-CS-Su-45, C-CS-Su-B-B1-01 | 58d | 0d |  | 359,219.98 |
| C-CS-Su-B-B1-02 |  | Columns & Wals from B1 to GF at Area B | 6d | 2015-06-15 | 2015-06-21 | C-CS-Su-B-B1-01, C-MEP-Em-022 FF | 76d | 18d |  | 645,530.37 |
| C-CS-Su-B-B1-03 |  | FRC Retaining Walls from B1 to GF at Area B | 12d | 2015-06-29 | 2015-07-12 | C-CS-Su-B-B1-01, C-MEP-Em-022 FF, C-CS-Su-55, C-CS-Su-B-B2-03 | 58d | 0d |  | 655,721.4 |
|  | 4 | **Ground Floor - Slab / Columns / Walls** |  | 2015-07-13 | 2015-07-28 |  |  |  |  |  |
| C-CS-Su-B-GF-01 |  | FRC Slab Works at Ground Level at Area B | 12d | 2015-07-13 | 2015-07-28 | C-CS-Su-B-B1-02, C-CS-Su-B-B1-03, P-CS-SR-313, C-MEP-Em-032 FF | 58d | 0d |  | 3,364,673.86 |
|  | 6 | **Ramps** |  | 2015-07-06 | 2015-10-27 |  |  |  |  |  |
| C-CS-Su-R-001 |  | FRC Ramp Slab from B3 to B2 at the in the Middle of the construction site at Area B | 25d | 2015-07-06 | 2015-08-05 | C-CS-Su-B-B2-01, C-CS-B2-11 | 87d | 0d |  | 300,825.18 |
| C-CS-Su-R-002 |  | FRC Ramp Slab from B2 to B1 at the in the Middle of the construction site at Area B | 25d | 2015-08-27 | 2015-09-28 | C-CS-Su-R-001, C-CS-Su-B-B1-01, C-CS-B1-21 | 133d | 0d |  | 300,825.18 |
| C-CS-Su-R-003 |  | FRC Ramp Slab from B1 to GF at the in the East of the construction site at Area B | 25d | 2015-09-29 | 2015-10-27 | C-CS-Su-B-GF-01, C-CS-GF-21, C-CS-Su-R-002 | 133d |  |  | 300,825.18 |

Notes:
- C-CS-Su-B-105: Expenses: 1 97525.1; 2 17723.6
- C-CS-Su-B-106: Expenses: 1 1360565
- C-CS-Su-B-107: Expenses: 1 185664
- C-CS-Su-B-108: Expenses: 1 210375
- C-CS-Su-B-109: Expenses: 1 91788.3; 2 16681
- C-CS-Su-B-110: Expenses: 1 1377924
- C-CS-Su-B-1012: Expenses: 1 198000
- C-CS-Su-B-111: Expenses: 1 188033
- C-CS-Su-B-B2-01: Expenses: C 3364674
- C-CS-Su-45: Expenses: A, B & C 303977; w 55242.9
- C-CS-Su-B-B2-02: Expenses: C 645530
- C-CS-Su-B-B2-03: Expenses: C 655721
- C-CS-Su-B-B1-01: Expenses: C 3364674
- C-CS-Su-55: Expenses: A, B & C 303977; w 55242.9
- C-CS-Su-B-B1-02: Expenses: C 645530
- C-CS-Su-B-B1-03: Expenses: C 655721
- C-CS-Su-B-GF-01: Expenses: C 3364674
- C-CS-Su-R-001: Expenses: C 300825
- C-CS-Su-R-002: Expenses: C 300825
- C-CS-Su-R-003: Expenses: C 300825

| ID | WBS | Activity | Duration | Start | Finish | Predecessors | Total float | Free float | Cost |
| --- | --- | --- | --- | --- | --- | --- | --- | --- | --- |
|  | 7 | **Stairs Step & Landing** |  | 2015-05-25 | 2015-10-03 |  |  |  |  |
|  | 1 | **Stair # 6** |  | 2015-05-25 | 2015-07-05 |  |  |  |  |
| C-CS-Su-A-S6-111 |  | FRC Walls, Stair steps & Landing from B3 to B2 at Area B | 12d | 2015-05-25 | 2015-06-07 | C-CS-Su-A-S5-101, C-CS-B3-1, C-CS-Su-A-R-001 | 154d | 0d | 15,624.49 |
| C-CS-Su-A-S6-121 |  | FRC Walls, Stair steps & Landing from B2 to B1 at Area B | 12d | 2015-06-08 | 2015-06-21 | C-CS-Su-A-S6-111 | 154d | 0d | 15,624.49 |
| C-CS-Su-A-S6-131 |  | FRC Walls, Stair steps & Landing from B1 to GF at Area B | 12d | 2015-06-22 | 2015-07-05 | C-CS-Su-A-S6-121 | 154d | 0d | 15,624.49 |
|  | 2 | **Stair # 7** |  | 2015-07-06 | 2015-08-18 |  |  |  |  |
| C-CS-Su-A-S7-141 |  | FRC Walls, Stair steps & Landing from B3 to B2 at Area B | 12d | 2015-07-06 | 2015-07-21 | C-CS-Su-A-S6-111, C-CS-B3-1, C-CS-Su-A-S6-131 | 154d | 0d | 15,624.49 |
| C-CS-Su-A-S7-151 |  | FRC Walls, Stair steps & Landing from B2 to B1 at Area B | 12d | 2015-07-22 | 2015-08-04 | C-CS-Su-A-S7-141, C-CS-Su-A-S6-121 | 154d | 0d | 15,624.49 |
| C-CS-Su-A-S7-161 |  | FRC Walls, Stair steps & Landing from B1 to GF at Area B | 12d | 2015-08-05 | 2015-08-18 | C-CS-Su-A-S7-151, C-CS-Su-A-S6-131 | 154d | 0d | 15,624.49 |
|  | 3 | **Stair # 8** |  | 2015-08-19 | 2015-10-03 |  |  |  |  |
| C-CS-Su-A-S8-171 |  | FRC Walls, Stair steps & Landing from B3 to B2 at Area B | 12d | 2015-08-19 | 2015-09-01 | C-CS-Su-A-S7-141, C-CS-B3-1, C-CS-Su-A-S7-161 | 154d | 0d | 15,624.49 |
| C-CS-Su-A-S8-181 |  | FRC Walls, Stair steps & Landing from B2 to B1 at Area B | 12d | 2015-09-02 | 2015-09-15 | C-CS-Su-A-S8-171, C-CS-Su-A-S7-151 | 154d | 0d | 15,624.49 |
| C-CS-Su-A-S8-191 |  | FRC Walls, Stair steps & Landing from B1 to GF at Area B | 12d | 2015-09-16 | 2015-10-03 | C-CS-Su-A-S8-181, C-CS-Su-A-S7-161 | 154d |  | 15,624.49 |
|  | 11 | **Manholes, Sump Pits & Trenches** |  | 2014-11-29 | 2016-01-10 |  |  |  |  |
| C-MEP-MSP-71 |  | Blinding for Manholes, Sump Pits & Trenches at Area B | 25d | 2014-11-29 | 2014-12-28 | C-MEP-MSP-11 | 58d | 0d | 56,776.69 |
| C-MEP-MSP-81 |  | Block work for Manholes, Sump Pits & Trenches at Area B | 25d | 2014-12-29 | 2015-01-26 | C-MEP-MSP-71 | 58d | 0d | 56,776.69 |
| C-MEP-MSP-91 |  | Concrete Base & Concrete Splay for Manholes, Sump Pits & Trenches at Area B | 25d | 2015-01-27 | 2015-02-25 | C-MEP-MSP-81 | 58d | 0d | 113,553.38 |
| C-MEP-MSP-101 |  | Installation of rendering & e-poxy for Manholes, Sump Pits & Trenches at Area B | 25d | 2015-02-26 | 2015-03-26 | C-MEP-MSP-91, C-MEP-MSP-51 FF | 58d | 0d | 17,033.01 |
| C-MEP-MSP-111 |  | Installation of Drainage pipes, valves for Manholes, Sump Pits & Trenches at Area B | 25d | 2015-11-12 | 2015-12-10 | C-MEP-MSP-101, C-MEP-MSP-41 | 259d | 0d | 28,388.35 |
| C-MEP-MSP-121 |  | Installation of Ductile Iron cover for the sump pits at Area B | 25d | 2015-12-12 | 2016-01-10 | C-MEP-MSP-111 | 259d | 249d | 11,355.34 |
|  | 1 | **Dewatering** |  | 2014-10-22 | 2015-03-12 |  |  |  |  |
| C-CS-Su-D-001 |  | Dewatering works | 120d | 2014-10-22 | 2015-03-12 | C-CS-Su-003 SS | 93d | 7d | 811,341.82 |
|  | 2 | **Site Boundary** |  | 2015-01-21 | 2016-01-24 |  |  |  |  |
| C-CS-Su-SB-001 |  | Bakfilling to Retaining Walls at Area A | 30d | 2015-01-21 | 2015-02-25 | C-CS-Su-A-GF-01 | 187d | 129d | 168,934.25 |
| C-CS-Su-SB-1 |  | Bakfilling to Retaining Walls at Area B-1 | 30d | 2015-07-29 | 2015-09-01 | C-CS-Su-SB-001, C-CS-Su-B-GF-01 | 58d | 0d | 168,934.25 |
| C-CS-Su-SB-11 |  | Bakfilling to Retaining Walls B1 at Area B-2 | 30d | 2015-09-02 | 2015-10-10 | C-CS-Su-SB-1, C-CS-Su-B-B1-03, C-CS-Su-B-GF-01 | 58d | 0d | 168,934.25 |
| C-CS-Su-SB-21 |  | Blinding around Retaining walls | 30d | 2015-10-11 | 2015-11-14 | C-CS-Su-SB-11 | 58d | 0d | 3,201.82 |
| C-CS-Su-SB-41 |  | Waterproofing for the slab around Retaining walls | 30d | 2015-11-15 | 2015-12-20 | C-CS-Su-SB-21 | 58d | 0d | 6,403.65 |
| C-CS-Su-SB-31 |  | FRC Slab & Beams around Retaining walls | 30d | 2015-12-21 | 2016-01-24 | C-CS-Su-SB-41 | 58d |  | 122,405.67 |

Notes:
- C-CS-Su-A-S6-111: Expenses: C 15624.5
- C-CS-Su-A-S6-121: Expenses: C 15624.5
- C-CS-Su-A-S6-131: Expenses: C 15624.5
- C-CS-Su-A-S7-141: Expenses: C 15624.5
- C-CS-Su-A-S7-151: Expenses: C 15624.5
- C-CS-Su-A-S7-161: Expenses: C 15624.5
- C-CS-Su-A-S8-171: Expenses: C 15624.5
- C-CS-Su-A-S8-181: Expenses: C 15624.5
- C-CS-Su-A-S8-191: Expenses: C 15624.5
- C-MEP-MSP-71: Expenses: 1 56776.7
- C-MEP-MSP-81: Expenses: 1 56776.7
- C-MEP-MSP-91: Expenses: 1 113553
- C-MEP-MSP-101: Expenses: 1 17033
- C-MEP-MSP-111: Expenses: 1 28388.3
- C-MEP-MSP-121: Expenses: 1 11355.3
- C-CS-Su-D-001: Expenses: A&B 783898; D&E 27444.2
- C-CS-Su-SB-001: Expenses: A&B 168934
- C-CS-Su-SB-1: Expenses: A&B 168934
- C-CS-Su-SB-11: Expenses: A&B 168934
- C-CS-Su-SB-21: Expenses: A 3201.82
- C-CS-Su-SB-41: Expenses: B 6403.65
- C-CS-Su-SB-31: Expenses: A, B, C, D E, F, G, H & I 122406

| ID | WBS | Activity | Duration | Start | Finish | Predecessors | Total float | Free float | Cost |
| --- | --- | --- | --- | --- | --- | --- | --- | --- | --- |
|  | 55 | **Superstructure** |  | 2014-12-20 | 2016-03-30 |  |  |  |  |
|  | 6 | **Core Walls - Ground to top roof level** |  | 2014-12-20 | 2016-02-06 |  |  |  |  |
|  | 1 | **Core Wall A** |  | 2014-12-20 | 2016-02-02 |  |  |  |  |
| C-CS-Su-A-CW-82 |  | FRC Core Wall "A" from GF to GF MZ | 6d | 2014-12-20 | 2014-12-25 | C-CS-Su-A-CW-2 | 0d |  | 302,102.95 |
| C-CS-Su-A-CW-92 |  | FRC Core Wall "A" from GF MZ to L1 | 6d | 2014-12-27 | 2015-01-01 | C-CS-Su-A-CW-82 | 1d | 0d | 302,102.95 |
| C-CS-Su-A-CW-42 |  | FRC Core Wall "A" from L1 to L1 MZ | 6d | 2015-01-03 | 2015-01-08 | C-CS-Su-A-CW-92 | 4d | 0d | 302,102.95 |
| C-CS-Su-A-CW-52 |  | FRC Core Wall "A" from L1 MZ level to L2 | 6d | 2015-01-10 | 2015-01-15 | C-CS-Su-A-CW-42, P-CS-SR-323 | 10d | 0d | 302,102.95 |
| C-CS-Su-A-CW-62 |  | FRC Core Wall "A" from L2 to L3 | 6d | 2015-01-17 | 2015-01-22 | C-CS-Su-A-CW-52, P-CS-SR-333 | 13d | 0d | 302,102.95 |
| C-CS-Su-A-CW-102 |  | FRC Core Wall "A" from L3 to L4 | 6d | 2015-01-24 | 2015-01-29 | C-CS-Su-A-CW-62, P-CS-SR-343 | 13d | 0d | 302,102.95 |
| C-CS-Su-A-CW-112 |  | FRC Core Wall "A" from L4 to L5 | 6d | 2015-01-31 | 2015-02-05 | C-CS-Su-A-CW-102, P-CS-SR-353 | 13d | 0d | 302,102.95 |
| C-CS-Su-A-CW-122 |  | FRC Core Wall "A" from L5 to L6 | 6d | 2015-02-08 | 2015-02-15 | C-CS-Su-A-CW-112, P-CS-SR-363 | 12d | 0d | 302,102.95 |
| C-CS-Su-A-CW-132 |  | FRC Core Wall "A" from L6 to L7 | 6d | 2015-02-16 | 2015-02-22 | C-CS-Su-A-CW-122, P-CS-SR-373 | 12d | 0d | 302,102.95 |
| C-CS-Su-A-CW-142 |  | FRC Core Wall "A" from L7 to L8 | 6d | 2015-02-23 | 2015-03-01 | C-CS-Su-A-CW-132, P-CS-SR-383 | 17d | 0d | 302,102.95 |
| C-CS-Su-A-CW-152 |  | FRC Core Wall "A" from L8 to L9 | 6d | 2015-03-02 | 2015-03-08 | C-CS-Su-A-CW-142, P-CS-SR-393 | 17d | 0d | 302,102.95 |
| C-CS-Su-A-CW-162 |  | FRC Core Wall "A" from L9 to L10 | 6d | 2015-03-09 | 2015-03-15 | C-CS-Su-A-CW-152, P-CS-SR-403 | 17d | 0d | 302,102.95 |
| C-CS-Su-A-CW-172 |  | FRC Core Wall "A" from L10 to L11 | 6d | 2015-03-16 | 2015-03-22 | C-CS-Su-A-CW-162, P-CS-SR-413 | 17d | 0d | 302,102.95 |
| C-CS-Su-A-CW-182 |  | FRC Core Wall "A" from L11 to L12 | 6d | 2015-03-23 | 2015-03-29 | C-CS-Su-A-CW-172, P-CS-SR-423 | 17d | 0d | 302,102.95 |
| C-CS-Su-A-CW-192 |  | FRC Core Wall "A" from L12 to L13 | 6d | 2015-03-30 | 2015-04-05 | C-CS-Su-A-CW-182, P-CS-SR-433 | 17d | 0d | 302,102.95 |
| C-CS-Su-A-CW-202 |  | FRC Core Wall "A" from L13 to L14 | 6d | 2015-04-06 | 2015-04-12 | C-CS-Su-A-CW-192, P-CS-SR-443 | 17d | 0d | 302,102.95 |
| C-CS-Su-A-CW-212 |  | FRC Core Wall "A" from L14 to L15 | 6d | 2015-04-13 | 2015-04-19 | C-CS-Su-A-CW-202, P-CS-SR-453 | 17d | 0d | 302,102.95 |
| C-CS-Su-A-CW-222 |  | FRC Core Wall "A" from L15 to L16 | 6d | 2015-04-20 | 2015-04-26 | C-CS-Su-A-CW-212, P-CS-SR-463 | 17d | 0d | 302,102.95 |
| C-CS-Su-A-CW-232 |  | FRC Core Wall "A" from L16 to L17 | 6d | 2015-04-27 | 2015-05-03 | C-CS-Su-A-CW-222, P-CS-SR-473 | 17d | 0d | 302,102.95 |
| C-CS-Su-A-CW-242 |  | FRC Core Wall "A" from L17 to L18 | 6d | 2015-05-04 | 2015-05-10 | C-CS-Su-A-CW-232, P-CS-SR-493 | 17d | 0d | 302,102.95 |
| C-CS-Su-A-CW-252 |  | FRC Core Wall "A" from L18 to L19 | 6d | 2015-05-11 | 2015-05-17 | C-CS-Su-A-CW-242, P-CS-SR-543 | 17d | 0d | 302,102.95 |
| C-CS-Su-A-CW-262 |  | FRC Core Wall "A" from L19 to L20 | 6d | 2015-05-18 | 2015-05-24 | C-CS-Su-A-CW-252, P-CS-SR-553 | 18d | 0d | 302,102.95 |
| C-CS-Su-A-CW-272 |  | FRC Core Wall "A" from L20 to L21 | 6d | 2015-05-25 | 2015-05-31 | C-CS-Su-A-CW-262, P-CS-SR-563 | 19d | 0d | 302,102.95 |
| C-CS-Su-A-CW-282 |  | FRC Core Wall "A" from L21 to L22 | 6d | 2015-06-01 | 2015-06-07 | C-CS-Su-A-CW-272, P-CS-SR-573 | 19d | 0d | 302,102.95 |
| C-CS-Su-A-CW-292 |  | FRC Core Wall "A" from L22 to L23 | 6d | 2015-06-08 | 2015-06-14 | C-CS-Su-A-CW-282, P-CS-SR-583 | 19d | 0d | 302,102.95 |
| C-CS-Su-A-CW-302 |  | FRC Core Wall "A" from L23 to L24 | 6d | 2015-06-15 | 2015-06-21 | C-CS-Su-A-CW-292, P-CS-SR-593 | 19d | 0d | 302,102.95 |
| C-CS-Su-A-CW-312 |  | FRC Core Wall "A" from L24 to L25 | 6d | 2015-06-22 | 2015-06-28 | C-CS-Su-A-CW-302, P-CS-SR-603 | 19d | 0d | 302,102.95 |
| C-CS-Su-A-CW-322 |  | FRC Core Wall "A" from L25 to L26 | 6d | 2015-06-29 | 2015-07-05 | C-CS-Su-A-CW-312, P-CS-SR-613 | 19d | 0d | 302,102.95 |
| C-CS-Su-A-CW-332 |  | FRC Core Wall "A" from L26 to L27 | 6d | 2015-07-06 | 2015-07-12 | C-CS-Su-A-CW-322, P-CS-SR-623 | 19d | 0d | 302,102.95 |
| C-CS-Su-A-CW-342 |  | FRC Core Wall "A" from L27 to L28 | 6d | 2015-07-13 | 2015-07-21 | C-CS-Su-A-CW-332, P-CS-SR-633 | 19d | 0d | 302,102.95 |
| C-CS-Su-A-CW-352 |  | FRC Core Wall "A" from L28 to L29 | 6d | 2015-07-22 | 2015-07-28 | C-CS-Su-A-CW-342, P-CS-SR-643 | 19d | 0d | 302,102.95 |
| C-CS-Su-A-CW-362 |  | FRC Core Wall "A" from L29 to L30 | 6d | 2015-07-29 | 2015-08-04 | C-CS-Su-A-CW-352, P-CS-SR-653 | 19d | 0d | 302,102.95 |
| C-CS-Su-A-CW-372 |  | FRC Core Wall "A" from L30 to L31 | 6d | 2015-08-09 | 2015-08-15 | C-CS-Su-A-CW-362, P-CS-SR-663 | 16d | 0d | 302,102.95 |
| C-CS-Su-A-CW-382 |  | FRC Core Wall "A" from L31 to L32 | 6d | 2015-08-18 | 2015-08-24 | C-CS-Su-A-CW-372, P-CS-SR-673 | 14d | 0d | 302,102.95 |
| C-CS-Su-A-CW-392 |  | FRC Core Wall "A" from L32 to L33 | 6d | 2015-08-25 | 2015-08-31 | C-CS-Su-A-CW-382, P-CS-SR-683 | 14d | 0d | 302,102.95 |
| C-CS-Su-A-CW-402 |  | FRC Core Wall "A" from L33 to L34 | 6d | 2015-09-01 | 2015-09-07 | C-CS-Su-A-CW-392, P-CS-SR-693 | 14d | 0d | 302,102.95 |
| C-CS-Su-A-CW-412 |  | FRC Core Wall "A" from L34 to L35 | 6d | 2015-09-09 | 2015-09-15 | C-CS-Su-A-CW-402, P-CS-SR-703 | 13d | 0d | 302,102.95 |
| C-CS-Su-A-CW-422 |  | FRC Core Wall "A" from L35 to L36 | 6d | 2015-09-19 | 2015-09-28 | C-CS-Su-A-CW-412, P-CS-SR-713 | 11d | 0d | 302,102.95 |
| C-CS-Su-A-CW-432 |  | FRC Core Wall "A" from L36 to L37 | 6d | 2015-09-29 | 2015-10-05 | C-CS-Su-A-CW-422, P-CS-SR-723 | 11d | 0d | 302,102.95 |
| C-CS-Su-A-CW-442 |  | FRC Core Wall "A" from L37 to L38 | 6d | 2015-10-07 | 2015-10-13 | C-CS-Su-A-CW-432, P-CS-SR-733 | 10d | 0d | 302,102.95 |
| C-CS-Su-A-CW-452 |  | FRC Core Wall "A" from L38 to L39 | 6d | 2015-10-20 | 2015-10-26 | C-CS-Su-A-CW-442, P-CS-SR-743 | 5d | 0d | 302,102.95 |
| C-CS-Su-A-CW-462 |  | FRC Core Wall "A" from L39 to L40 | 6d | 2015-10-27 | 2015-11-02 | C-CS-Su-A-CW-452 | 5d | 0d | 302,102.95 |
| C-CS-Su-A-CW-472 |  | FRC Core Wall "A" from L40 to L41 | 6d | 2015-11-03 | 2015-11-09 | C-CS-Su-A-CW-462 | 15d | 0d | 302,102.95 |
| C-CS-Su-A-CW-482 |  | FRC Core Wall "A" from L41 to L42 | 6d | 2015-11-10 | 2015-11-16 | C-CS-Su-A-CW-472 | 15d | 0d | 302,102.95 |
| C-CS-Su-A-CW-492 |  | FRC Core Wall "A" from L42 to L43 | 6d | 2015-11-17 | 2015-11-23 | C-CS-Su-A-CW-482 | 15d | 0d | 302,102.95 |
| C-CS-Su-A-CW-502 |  | FRC Core Wall "A" from L43 to L44 | 6d | 2015-11-24 | 2015-11-30 | C-CS-Su-A-CW-492 | 15d | 0d | 302,102.95 |
| C-CS-Su-A-CW-512 |  | FRC Core Wall "A" from L44 to L45 | 6d | 2015-12-01 | 2015-12-07 | C-CS-Su-A-CW-502 | 15d | 0d | 302,102.95 |
| C-CS-Su-A-CW-522 |  | FRC Core Wall "A" from L45 to L46 | 6d | 2015-12-08 | 2015-12-14 | C-CS-Su-A-CW-512 | 15d | 0d | 302,102.95 |
| C-CS-Su-A-CW-532 |  | FRC Core Wall "A" from L46 to L47 | 6d | 2015-12-15 | 2015-12-22 | C-CS-Su-A-CW-522 | 15d | 0d | 302,102.95 |
| C-CS-Su-A-CW-542 |  | FRC Core Wall "A" from L47 to L48 | 6d | 2015-12-23 | 2015-12-29 | C-CS-Su-A-CW-532 | 15d | 0d | 302,102.95 |
| C-CS-Su-A-CW-552 |  | FRC Core Wall "A" from L48 to L49 | 6d | 2015-12-30 | 2016-01-05 | C-CS-Su-A-CW-542 | 15d | 0d | 302,102.95 |
| C-CS-Su-A-CW-562 |  | FRC Core Wall "A" from L49 to L50 | 6d | 2016-01-06 | 2016-01-12 | C-CS-Su-A-CW-552 | 15d | 0d | 302,102.95 |
| C-CS-Su-A-CW-572 |  | FRC Core Wall "A" from L50 to L51 | 6d | 2016-01-13 | 2016-01-19 | C-CS-Su-A-CW-562 | 15d | 0d | 302,102.95 |
| C-CS-Su-A-CW-582 |  | FRC Core Wall "A" from L51 to Roof | 6d | 2016-01-20 | 2016-01-26 | C-CS-Su-A-CW-572 | 15d | 0d | 302,102.95 |
| C-CS-Su-A-CW-592 |  | FRC Core Wall "A" from Roof to Upper Roof | 6d | 2016-01-27 | 2016-02-02 | C-CS-Su-A-CW-582 | 15d | 0d | 302,102.95 |

Notes:
- C-CS-Su-A-CW-82: Expenses: CW 270069; SS 32033.8
- C-CS-Su-A-CW-92: Expenses: CW 270069; SS 32033.8
- C-CS-Su-A-CW-42: Expenses: CW 270069; SS 32033.8
- C-CS-Su-A-CW-52: Expenses: CW 270069; SS 32033.8
- C-CS-Su-A-CW-62: Expenses: CW 270069; SS 32033.8
- C-CS-Su-A-CW-102: Expenses: CW 270069; SS 32033.8
- C-CS-Su-A-CW-112: Expenses: CW 270069; SS 32033.8
- C-CS-Su-A-CW-122: Expenses: CW 270069; SS 32033.8
- C-CS-Su-A-CW-132: Expenses: CW 270069; SS 32033.8
- C-CS-Su-A-CW-142: Expenses: CW 270069; SS 32033.8
- C-CS-Su-A-CW-152: Expenses: CW 270069; SS 32033.8
- C-CS-Su-A-CW-162: Expenses: CW 270069; SS 32033.8
- C-CS-Su-A-CW-172: Expenses: CW 270069; SS 32033.8
- C-CS-Su-A-CW-182: Expenses: CW 270069; SS 32033.8
- C-CS-Su-A-CW-192: Expenses: CW 270069; SS 32033.8
- C-CS-Su-A-CW-202: Expenses: CW 270069; SS 32033.8
- C-CS-Su-A-CW-212: Expenses: CW 270069; SS 32033.8
- C-CS-Su-A-CW-222: Expenses: CW 270069; SS 32033.8
- C-CS-Su-A-CW-232: Expenses: CW 270069; SS 32033.8
- C-CS-Su-A-CW-242: Expenses: CW 270069; SS 32033.8
- C-CS-Su-A-CW-252: Expenses: CW 270069; SS 32033.8
- C-CS-Su-A-CW-262: Expenses: CW 270069; SS 32033.8
- C-CS-Su-A-CW-272: Expenses: CW 270069; SS 32033.8
- C-CS-Su-A-CW-282: Expenses: CW 270069; SS 32033.8
- C-CS-Su-A-CW-292: Expenses: CW 270069; SS 32033.8
- C-CS-Su-A-CW-302: Expenses: CW 270069; SS 32033.8
- C-CS-Su-A-CW-312: Expenses: CW 270069; SS 32033.8
- C-CS-Su-A-CW-322: Expenses: CW 270069; SS 32033.8
- C-CS-Su-A-CW-332: Expenses: CW 270069; SS 32033.8
- C-CS-Su-A-CW-342: Expenses: CW 270069; SS 32033.8
- C-CS-Su-A-CW-352: Expenses: CW 270069; SS 32033.8
- C-CS-Su-A-CW-362: Expenses: CW 270069; SS 32033.8
- C-CS-Su-A-CW-372: Expenses: CW 270069; SS 32033.8
- C-CS-Su-A-CW-382: Expenses: CW 270069; SS 32033.8
- C-CS-Su-A-CW-392: Expenses: CW 270069; SS 32033.8
- C-CS-Su-A-CW-402: Expenses: CW 270069; SS 32033.8
- C-CS-Su-A-CW-412: Expenses: CW 270069; SS 32033.8
- C-CS-Su-A-CW-422: Expenses: CW 270069; SS 32033.8
- C-CS-Su-A-CW-432: Expenses: CW 270069; SS 32033.8
- C-CS-Su-A-CW-442: Expenses: CW 270069; SS 32033.8
- C-CS-Su-A-CW-452: Expenses: CW 270069; SS 32033.8
- C-CS-Su-A-CW-462: Expenses: CW 270069; SS 32033.8
- C-CS-Su-A-CW-472: Expenses: CW 270069; SS 32033.8
- C-CS-Su-A-CW-482: Expenses: CW 270069; SS 32033.8
- C-CS-Su-A-CW-492: Expenses: CW 270069; SS 32033.8
- C-CS-Su-A-CW-502: Expenses: CW 270069; SS 32033.8
- C-CS-Su-A-CW-512: Expenses: CW 270069; SS 32033.8
- C-CS-Su-A-CW-522: Expenses: CW 270069; SS 32033.8
- C-CS-Su-A-CW-532: Expenses: CW 270069; SS 32033.8
- C-CS-Su-A-CW-542: Expenses: CW 270069; SS 32033.8
- C-CS-Su-A-CW-552: Expenses: CW 270069; SS 32033.8
- C-CS-Su-A-CW-562: Expenses: CW 270069; SS 32033.8
- C-CS-Su-A-CW-572: Expenses: CW 270069; SS 32033.8
- C-CS-Su-A-CW-582: Expenses: CW 270069; SS 32033.8
- C-CS-Su-A-CW-592: Expenses: CW 270069; SS 32033.8

| ID | WBS | Activity | Duration | Start | Finish | Predecessors | Total float | Free float | Cost |
| --- | --- | --- | --- | --- | --- | --- | --- | --- | --- |
|  | 2 | **Core Walll B** |  | 2014-12-20 | 2016-02-06 |  |  |  |  |
| C-CS-Su-B-CW-1722 |  | FRC Core Wall "B" from GF to GF MZ | 6d | 2014-12-20 | 2014-12-25 | C-CS-Su-A-CW-32, C-CS-Su-A-CW-82 SS | 0d |  | 302,102.95 |
| C-CS-Su-B-CW-1712 |  | FRC Core Wall "B" from GF MZ to L1 | 6d | 2014-12-27 | 2015-01-01 | C-CS-Su-B-CW-1722, C-CS-Su-A-CW-92 SS | 1d | 0d | 302,102.95 |
| C-CS-Su-B-CW-602 |  | FRC Core Wall "B" from L1 to L1 MZ | 6d | 2015-01-03 | 2015-01-08 | C-CS-Su-A-CW-42 SS, C-CS-Su-B-CW-1712 | 4d | 0d | 302,102.95 |
| C-CS-Su-B-CW-612 |  | FRC Core Wall "B" from L1 MZ to L2 | 6d | 2015-01-10 | 2015-01-15 | C-CS-Su-B-CW-602, C-CS-Su-A-CW-52 SS, P-CS-SR-323 | 10d | 0d | 302,102.95 |
| C-CS-Su-B-CW-622 |  | FRC Core Wall "B" from L2 to L3 | 6d | 2015-01-17 | 2015-01-22 | C-CS-Su-B-CW-612, C-CS-Su-A-CW-62 SS, P-CS-SR-333 | 15d | 0d | 302,102.95 |
| C-CS-Su-B-CW-632 |  | FRC Core Wall "B" from L3 to L4 | 6d | 2015-01-24 | 2015-01-29 | C-CS-Su-B-CW-622, C-CS-Su-A-CW-102 SS, P-CS-SR-343 | 15d | 2d | 302,102.95 |
| C-CS-Su-B-CW-642 |  | FRC Core Wall "B" from L4 to L5 | 6d | 2015-02-02 | 2015-02-08 | C-CS-Su-B-CW-632, C-CS-Su-A-CW-112 SS+2d, P-CS-SR-353 | 13d | 1d | 302,102.95 |
| C-CS-Su-B-CW-652 |  | FRC Core Wall "B" from L5 to L6 | 6d | 2015-02-11 | 2015-02-17 | C-CS-Su-B-CW-642, C-CS-Su-A-CW-122 SS+2d, P-CS-SR-363 | 12d | 0d | 302,102.95 |
| C-CS-Su-B-CW-662 |  | FRC Core Wall "B" from L6 to L7 | 6d | 2015-02-18 | 2015-02-24 | C-CS-Su-B-CW-652, C-CS-Su-A-CW-132 SS+2d, P-CS-SR-373 | 12d | 0d | 302,102.95 |
| C-CS-Su-B-CW-672 |  | FRC Core Wall "B" from L7 to L8 | 6d | 2015-02-25 | 2015-03-03 | C-CS-Su-B-CW-662, C-CS-Su-A-CW-142 SS+2d, P-CS-SR-383 | 17d | 0d | 302,102.95 |
| C-CS-Su-B-CW-682 |  | FRC Core Wall "B" from L8 to L9 | 6d | 2015-03-04 | 2015-03-10 | C-CS-Su-B-CW-672, C-CS-Su-A-CW-152 SS+2d, P-CS-SR-393 | 17d | 0d | 302,102.95 |
| C-CS-Su-B-CW-692 |  | FRC Core Wall "B" from L9 to L10 | 6d | 2015-03-11 | 2015-03-17 | C-CS-Su-B-CW-682, C-CS-Su-A-CW-162 SS+2d, P-CS-SR-403 | 17d | 0d | 302,102.95 |
| C-CS-Su-B-CW-702 |  | FRC Core Wall "B" from L10 to L11 | 6d | 2015-03-18 | 2015-03-24 | C-CS-Su-B-CW-692, C-CS-Su-A-CW-172 SS+2d, P-CS-SR-413 | 17d | 0d | 302,102.95 |
| C-CS-Su-B-CW-712 |  | FRC Core Wall "B" from L11 to L12 | 6d | 2015-03-25 | 2015-03-31 | C-CS-Su-B-CW-702, C-CS-Su-A-CW-182 SS+2d, P-CS-SR-423 | 17d | 0d | 302,102.95 |
| C-CS-Su-B-CW-722 |  | FRC Core Wall "B" from L12 to L13 | 6d | 2015-04-01 | 2015-04-07 | C-CS-Su-B-CW-712, C-CS-Su-A-CW-192 SS+2d, P-CS-SR-433 | 17d | 0d | 302,102.95 |
| C-CS-Su-B-CW-732 |  | FRC Core Wall "B" from L13 to L14 | 6d | 2015-04-08 | 2015-04-14 | C-CS-Su-B-CW-722, C-CS-Su-A-CW-202 SS+2d, P-CS-SR-443 | 17d | 0d | 302,102.95 |
| C-CS-Su-B-CW-742 |  | FRC Core Wall "B" from L14 to L15 | 6d | 2015-04-15 | 2015-04-21 | C-CS-Su-B-CW-732, C-CS-Su-A-CW-212 SS+2d, P-CS-SR-453 | 17d | 0d | 302,102.95 |
| C-CS-Su-B-CW-752 |  | FRC Core Wall "B" from L15 to L16 | 6d | 2015-04-22 | 2015-04-28 | C-CS-Su-B-CW-742, C-CS-Su-A-CW-222 SS+2d, P-CS-SR-463 | 17d | 0d | 302,102.95 |
| C-CS-Su-B-CW-762 |  | FRC Core Wall "B" from L16 to L17 | 6d | 2015-04-29 | 2015-05-05 | C-CS-Su-B-CW-752, C-CS-Su-A-CW-232 SS+2d, P-CS-SR-473 | 17d | 0d | 302,102.95 |
| C-CS-Su-B-CW-772 |  | FRC Core Wall "B" from L17 to L18 | 6d | 2015-05-06 | 2015-05-12 | C-CS-Su-B-CW-762, C-CS-Su-A-CW-242 SS+2d, P-CS-SR-493 | 17d | 0d | 302,102.95 |
| C-CS-Su-B-CW-782 |  | FRC Core Wall "B" from L18 to L19 | 6d | 2015-05-13 | 2015-05-19 | C-CS-Su-B-CW-772, C-CS-Su-A-CW-252 SS+2d, P-CS-SR-543 | 17d | 0d | 302,102.95 |
| C-CS-Su-B-CW-792 |  | FRC Core Wall "B" from L19 to L20 | 6d | 2015-05-20 | 2015-05-26 | C-CS-Su-B-CW-782, C-CS-Su-A-CW-262 SS+2d, P-CS-SR-553 | 18d | 0d | 302,102.95 |
| C-CS-Su-B-CW-802 |  | FRC Core Wall "B" from L20 to L21 | 6d | 2015-05-27 | 2015-06-02 | C-CS-Su-B-CW-792, C-CS-Su-A-CW-272 SS+2d, P-CS-SR-563 | 19d | 0d | 302,102.95 |
| C-CS-Su-B-CW-812 |  | FRC Core Wall "B" from L20 to L22 | 6d | 2015-06-03 | 2015-06-09 | C-CS-Su-B-CW-802, C-CS-Su-A-CW-282 SS+2d, P-CS-SR-573 | 19d | 0d | 302,102.95 |
| C-CS-Su-B-CW-822 |  | FRC Core Wall "B" from L22 to L23 | 6d | 2015-06-10 | 2015-06-16 | C-CS-Su-B-CW-812, C-CS-Su-A-CW-292 SS+2d, P-CS-SR-583 | 19d | 0d | 302,102.95 |
| C-CS-Su-B-CW-832 |  | FRC Core Wall "B" from L23 to L24 | 6d | 2015-06-17 | 2015-06-23 | C-CS-Su-B-CW-822, C-CS-Su-A-CW-302 SS+2d, P-CS-SR-593 | 19d | 0d | 302,102.95 |
| C-CS-Su-B-CW-842 |  | FRC Core Wall "B" from L24 to L25 | 6d | 2015-06-24 | 2015-06-30 | C-CS-Su-B-CW-832, C-CS-Su-A-CW-312 SS+2d, P-CS-SR-603 | 19d | 0d | 302,102.95 |
| C-CS-Su-B-CW-852 |  | FRC Core Wall "B" from L25 to L26 | 6d | 2015-07-01 | 2015-07-07 | C-CS-Su-B-CW-842, C-CS-Su-A-CW-322 SS+2d, P-CS-SR-613 | 19d | 0d | 302,102.95 |
| C-CS-Su-B-CW-862 |  | FRC Core Wall "B" from L26 to L27 | 6d | 2015-07-08 | 2015-07-14 | C-CS-Su-B-CW-852, C-CS-Su-A-CW-332 SS+2d, P-CS-SR-623 | 19d | 0d | 302,102.95 |
| C-CS-Su-B-CW-872 |  | FRC Core Wall "B" from L27 to L28 | 6d | 2015-07-18 | 2015-07-23 | C-CS-Su-B-CW-862, C-CS-Su-A-CW-342 SS+2d, P-CS-SR-633 | 19d | 0d | 302,102.95 |
| C-CS-Su-B-CW-882 |  | FRC Core Wall "B" from L28 to L29 | 6d | 2015-07-25 | 2015-07-30 | C-CS-Su-B-CW-872, C-CS-Su-A-CW-352 SS+2d, P-CS-SR-643 | 19d | 0d | 302,102.95 |
| C-CS-Su-B-CW-892 |  | FRC Core Wall "B" from L29 to L30 | 6d | 2015-08-01 | 2015-08-06 | C-CS-Su-B-CW-882, C-CS-Su-A-CW-362 SS+2d, P-CS-SR-653 | 19d | 3d | 302,102.95 |
| C-CS-Su-B-CW-902 |  | FRC Core Wall "B" from L30 to L31 | 6d | 2015-08-11 | 2015-08-17 | C-CS-Su-B-CW-892, C-CS-Su-A-CW-372 SS+2d, P-CS-SR-663 | 16d | 2d | 302,102.95 |
| C-CS-Su-B-CW-912 |  | FRC Core Wall "B" from L31 to L32 | 6d | 2015-08-20 | 2015-08-26 | C-CS-Su-B-CW-902, C-CS-Su-A-CW-382 SS+2d, P-CS-SR-673 | 14d | 0d | 302,102.95 |
| C-CS-Su-B-CW-922 |  | FRC Core Wall "B" from L32 to L33 | 6d | 2015-08-27 | 2015-09-02 | C-CS-Su-B-CW-912, C-CS-Su-A-CW-392 SS+2d, P-CS-SR-683 | 14d | 0d | 302,102.95 |
| C-CS-Su-B-CW-932 |  | FRC Core Wall "B" from L33 to L34 | 6d | 2015-09-03 | 2015-09-09 | C-CS-Su-B-CW-922, C-CS-Su-A-CW-402 SS+2d, P-CS-SR-693 | 14d | 1d | 302,102.95 |
| C-CS-Su-B-CW-942 |  | FRC Core Wall "B" from L34 to L35 | 6d | 2015-09-12 | 2015-09-17 | C-CS-Su-B-CW-932, C-CS-Su-A-CW-412 SS+2d, P-CS-SR-703 | 13d | 2d | 302,102.95 |
| C-CS-Su-B-CW-952 |  | FRC Core Wall "B" from L35 to L36 | 6d | 2015-09-24 | 2015-09-30 | C-CS-Su-B-CW-942, C-CS-Su-A-CW-422 SS+2d, P-CS-SR-713 | 11d | 0d | 302,102.95 |
| C-CS-Su-B-CW-962 |  | FRC Core Wall "B" from L36 to L37 | 6d | 2015-10-01 | 2015-10-07 | C-CS-Su-B-CW-952, C-CS-Su-A-CW-432 SS+2d, P-CS-SR-723 | 11d | 0d | 302,102.95 |
| C-CS-Su-B-CW-972 |  | FRC Core Wall "B" from L37 to L38 | 6d | 2015-10-10 | 2015-10-15 | C-CS-Su-B-CW-962, C-CS-Su-A-CW-442 SS+2d, P-CS-SR-733 | 10d | 5d | 302,102.95 |
| C-CS-Su-B-CW-982 |  | FRC Core Wall "B" from L38 to L39 | 6d | 2015-10-22 | 2015-10-28 | C-CS-Su-B-CW-972, C-CS-Su-A-CW-452 SS+2d, P-CS-SR-743 | 5d | 0d | 302,102.95 |
| C-CS-Su-B-CW-992 |  | FRC Core Wall "B" from L39 to L40 | 6d | 2015-10-29 | 2015-11-04 | C-CS-Su-B-CW-982, C-CS-Su-A-CW-462 SS+2d, P-CS-SR-753 | 5d | 0d | 302,102.95 |
| C-CS-Su-B-CW-1002 |  | FRC Core Wall "B" from L40 to L41 | 6d | 2015-11-05 | 2015-11-11 | C-CS-Su-B-CW-992, C-CS-Su-A-CW-472 SS+2d | 16d | 0d | 302,102.95 |
| C-CS-Su-B-CW-1012 |  | FRC Core Wall "B" from L41 to L42 | 6d | 2015-11-12 | 2015-11-18 | C-CS-Su-B-CW-1002, C-CS-Su-A-CW-482 SS+2d | 16d | 0d | 302,102.95 |
| C-CS-Su-B-CW-1022 |  | FRC Core Wall "B" from L42 to L43 | 6d | 2015-11-19 | 2015-11-25 | C-CS-Su-B-CW-1012, C-CS-Su-A-CW-492 SS+2d | 16d | 0d | 302,102.95 |
| C-CS-Su-B-CW-1032 |  | FRC Core Wall "B" from L43 to L44 | 6d | 2015-11-26 | 2015-12-02 | C-CS-Su-B-CW-1022, C-CS-Su-A-CW-502 SS+2d | 16d | 0d | 302,102.95 |
| C-CS-Su-B-CW-1042 |  | FRC Core Wall "B" from L44 to L45 | 6d | 2015-12-03 | 2015-12-09 | C-CS-Su-B-CW-1032, C-CS-Su-A-CW-512 SS+2d | 16d | 0d | 302,102.95 |
| C-CS-Su-B-CW-1052 |  | FRC Core Wall "B" from L45 to L46 | 6d | 2015-12-10 | 2015-12-16 | C-CS-Su-B-CW-1042, C-CS-Su-A-CW-522 SS+2d | 16d | 0d | 302,102.95 |
| C-CS-Su-B-CW-1062 |  | FRC Core Wall "B" from L46 to L47 | 6d | 2015-12-17 | 2015-12-24 | C-CS-Su-B-CW-1052, C-CS-Su-A-CW-532 SS+2d | 16d | 0d | 302,102.95 |
| C-CS-Su-B-CW-1072 |  | FRC Core Wall "B" from L47 to L48 | 6d | 2015-12-26 | 2015-12-31 | C-CS-Su-B-CW-1062, C-CS-Su-A-CW-542 SS+2d | 16d | 0d | 302,102.95 |
| C-CS-Su-B-CW-1082 |  | FRC Core Wall "B" from L48 to L49 | 6d | 2016-01-02 | 2016-01-07 | C-CS-Su-B-CW-1072, C-CS-Su-A-CW-552 SS+2d | 16d | 0d | 302,102.95 |
| C-CS-Su-B-CW-1092 |  | FRC Core Wall "B" from L49 to L50 | 6d | 2016-01-09 | 2016-01-14 | C-CS-Su-B-CW-1082, C-CS-Su-A-CW-562 SS+2d | 16d | 0d | 302,102.95 |
| C-CS-Su-B-CW-1102 |  | FRC Core Wall "B" from L50 to L51 | 6d | 2016-01-16 | 2016-01-21 | C-CS-Su-B-CW-1092, C-CS-Su-A-CW-572 SS+2d | 16d | 0d | 302,102.95 |
| C-CS-Su-B-CW-1112 |  | FRC Core Wall "B" from L51 to Roof | 6d | 2016-01-23 | 2016-01-28 | C-CS-Su-B-CW-1102, C-CS-Su-A-CW-582 SS+2d | 16d | 1d | 302,102.95 |
| C-CS-Su-B-CW-1122 |  | FRC Core Wall "B" from Roof to Upper Roof | 6d | 2016-01-31 | 2016-02-06 | C-CS-Su-B-CW-1112, C-CS-Su-A-CW-592 SS+3d | 15d | 0d | 302,102.95 |

Notes:
- C-CS-Su-B-CW-1722: Expenses: CW 270069; SS 32033.8
- C-CS-Su-B-CW-1712: Expenses: CW 270069; SS 32033.8
- C-CS-Su-B-CW-602: Expenses: CW 270069; SS 32033.8
- C-CS-Su-B-CW-612: Expenses: CW 270069; SS 32033.8
- C-CS-Su-B-CW-622: Expenses: CW 270069; SS 32033.8
- C-CS-Su-B-CW-632: Expenses: CW 270069; SS 32033.8
- C-CS-Su-B-CW-642: Expenses: CW 270069; SS 32033.8
- C-CS-Su-B-CW-652: Expenses: CW 270069; SS 32033.8
- C-CS-Su-B-CW-662: Expenses: CW 270069; SS 32033.8
- C-CS-Su-B-CW-672: Expenses: CW 270069; SS 32033.8
- C-CS-Su-B-CW-682: Expenses: CW 270069; SS 32033.8
- C-CS-Su-B-CW-692: Expenses: CW 270069; SS 32033.8
- C-CS-Su-B-CW-702: Expenses: CW 270069; SS 32033.8
- C-CS-Su-B-CW-712: Expenses: CW 270069; SS 32033.8
- C-CS-Su-B-CW-722: Expenses: CW 270069; SS 32033.8
- C-CS-Su-B-CW-732: Expenses: CW 270069; SS 32033.8
- C-CS-Su-B-CW-742: Expenses: CW 270069; SS 32033.8
- C-CS-Su-B-CW-752: Expenses: CS 270069; SS 32033.8
- C-CS-Su-B-CW-762: Expenses: CW 270069; SS 32033.8
- C-CS-Su-B-CW-772: Expenses: CW 270069; SS 32033.8
- C-CS-Su-B-CW-782: Expenses: CW 270069; SS 32033.8
- C-CS-Su-B-CW-792: Expenses: CW 270069; SS 32033.8
- C-CS-Su-B-CW-802: Expenses: CW 270069; SS 32033.8
- C-CS-Su-B-CW-812: Expenses: CW 270069; SS 32033.8
- C-CS-Su-B-CW-822: Expenses: CW 270069; SS 32033.8
- C-CS-Su-B-CW-832: Expenses: CW 270069; SS 32033.8
- C-CS-Su-B-CW-842: Expenses: CW 270069; SS 32033.8
- C-CS-Su-B-CW-852: Expenses: CW 270069; SS 32033.8
- C-CS-Su-B-CW-862: Expenses: CW 270069; SS 32033.8
- C-CS-Su-B-CW-872: Expenses: CW 270069; SS 32033.8
- C-CS-Su-B-CW-882: Expenses: CW 270069; SS 32033.8
- C-CS-Su-B-CW-892: Expenses: CW 270069; SS 32033.8
- C-CS-Su-B-CW-902: Expenses: CW 270069; SS 32033.8
- C-CS-Su-B-CW-912: Expenses: CW 270069; SS 32033.8
- C-CS-Su-B-CW-922: Expenses: CW 270069; SS 32033.8
- C-CS-Su-B-CW-932: Expenses: CW 270069; SS 32033.8
- C-CS-Su-B-CW-942: Expenses: CW 270069; SS 32033.8
- C-CS-Su-B-CW-952: Expenses: CW 270069; SS 32033.8
- C-CS-Su-B-CW-962: Expenses: CW 270069; SS 32033.8
- C-CS-Su-B-CW-972: Expenses: CW 270069; SS 32033.8
- C-CS-Su-B-CW-982: Expenses: CW 270069; SS 32033.8
- C-CS-Su-B-CW-992: Expenses: CW 270069; SS 32033.8
- C-CS-Su-B-CW-1002: Expenses: CW 270069; SS 32033.8
- C-CS-Su-B-CW-1012: Expenses: CW 270069; SS 32033.8
- C-CS-Su-B-CW-1022: Expenses: CW 270069; SS 32033.8
- C-CS-Su-B-CW-1032: Expenses: CW 270069; SS 32033.8
- C-CS-Su-B-CW-1042: Expenses: CW 270069; SS 32033.8
- C-CS-Su-B-CW-1052: Expenses: CW 270069; SS 32033.8
- C-CS-Su-B-CW-1062: Expenses: CW 270069; SS 32033.8
- C-CS-Su-B-CW-1072: Expenses: CW 270069; SS 32033.8
- C-CS-Su-B-CW-1082: Expenses: CW 270069; SS 32033.8
- C-CS-Su-B-CW-1092: Expenses: CW 270069; SS 32033.8
- C-CS-Su-B-CW-1102: Expenses: CW 270069; SS 32033.8
- C-CS-Su-B-CW-1112: Expenses: CW 270069; SS 32033.8
- C-CS-Su-B-CW-1122: Expenses: CW 270069; SS 32033.8

| ID | WBS | Activity | Duration | Start | Finish | Predecessors | Total float | Cost |
| --- | --- | --- | --- | --- | --- | --- | --- | --- |
|  | 2 | **Slab / Columns / Walls** |  | 2015-01-28 | 2016-03-30 |  |  |  |
|  | 1 | **Ground floor Mezzanine - Slab / Columns / Walls** |  | 2015-01-28 | 2015-02-05 |  |  |  |
| C-CS-S-MZ-01 |  | FRC PT Slab & Beams Works at Mezzanine level | 5d | 2015-01-28 | 2015-02-02 | C-CS-Su-A-GF-02, P-CS-SR-323, P-CS-C-723, C-CS-Su-B-CW-612 | 0d | 133,058.83 |
| C-CS-S-MZ-02 |  | FRC Columns & Walls from MZ to L1 | 3d | 2015-02-03 | 2015-02-05 | C-CS-S-MZ-01, C-MEP-Em-32 FF+1d, C-CS-MZ-41 | 0d | 149,088.83 |
|  | 3 | **Level 1 - Slab / Columns / Walls** |  | 2015-02-05 | 2015-02-15 |  |  |  |
| C-CS-S-L1-01 |  | FRC PT Slab & Beams Works at Level 1 | 5d | 2015-02-05 | 2015-02-11 | C-CS-S-MZ-02 SS+2d, P-CS-SR-333, C-CS-Su-B-CW-622 SS | 0d | 908,210.17 |
| C-CS-S-L1-02 |  | FRC Columns & Walls from L1 to L1 Mezz. | 3d | 2015-02-12 | 2015-02-15 | C-CS-S-L1-01, C-MEP-Em-42 FF+1d, C-CS-L1-61 | 0d | 1,017,625 |
|  | 55 | **Level 1 Mezz. - Slab / Columns / Walls** |  | 2015-02-15 | 2015-02-23 |  |  |  |
| C-CS-S-L1M-2 |  | FRC PT Slab & Beams Works at Level 1 Mezz. | 5d | 2015-02-15 | 2015-02-19 | C-CS-S-L1-02 SS+2d, C-CS-Su-B-CW-632 SS | 0d | 438,634.14 |
| C-CS-S-L1M-12 |  | FRC Columns & Walls from L1 Mezz. to L2 | 3d | 2015-02-21 | 2015-02-23 | C-CS-S-L1M-2, C-CS-L1-71 | 0d | 491,477.73 |
|  | 2 | **Level 2 - Slab / Columns / Walls** |  | 2015-02-23 | 2015-03-03 |  |  |  |
| C-CS-S-L2-2 |  | FRC PT Slab & Beams Works at Level 2 | 5d | 2015-02-23 | 2015-02-28 | C-CS-S-L1M-12 SS+2d, C-CS-Su-B-CW-642 SS | 0d | 821,820.77 |
| C-CS-S-L2-12 |  | FRC Columns & Walls from L2 to L3 | 3d | 2015-03-01 | 2015-03-03 | C-CS-S-L2-2, P-CS-SR-343, C-MEP-Em-52 FF+1d, C-CS-L2-61 | 0d | 920,828.01 |
|  | 4 | **Level 3 - Slab / Columns / Walls** |  | 2015-03-03 | 2015-03-11 |  |  |  |
| C-CS-S-L3-22 |  | FRC PT Slab & Beams Works at Level 3 | 5d | 2015-03-03 | 2015-03-08 | C-CS-S-L2-12 SS+2d, P-CS-SR-353, C-CS-Su-B-CW-652 SS | 0d | 794,095.11 |
| C-CS-S-L3-32 |  | FRC Columns & Walls from L3 to L4 | 3d | 2015-03-09 | 2015-03-11 | C-CS-S-L3-22, C-MEP-Em-62 FF+1d, C-CS-L3-71 | 0d | 889,762.16 |
|  | 5 | **Level 4 - Slab / Columns / Walls** |  | 2015-03-11 | 2015-03-19 |  |  |  |
| C-CS-S-L4-42 |  | FRC PT Slab & Beams Works at Level 4 | 5d | 2015-03-11 | 2015-03-16 | C-CS-S-L3-32 SS+2d, P-CS-SR-363, C-CS-Su-B-CW-662 | 0d | 794,095.11 |
| C-CS-S-L4-52 |  | FRC Columns & Walls from L4 to L5 | 3d | 2015-03-17 | 2015-03-19 | C-CS-S-L4-42, C-MEP-Em-71 FF+1d, C-CS-L4-81 | 0d | 889,762.16 |
|  | 6 | **Level 5 - Slab / Columns / Walls** |  | 2015-03-19 | 2015-03-28 |  |  |  |
| C-CS-S-L5-62 |  | FRC PT Slab & Beams Works at Level 5 | 5d | 2015-03-19 | 2015-03-24 | C-CS-S-L4-52 SS+2d, P-CS-SR-373, C-CS-Su-B-CW-672 SS | 0d | 595,411.66 |
| C-CS-S-L5-72 |  | FRC Columns & Walls from L5 to L6 | 3d | 2015-03-25 | 2015-03-28 | C-CS-S-L5-62, C-MEP-Em-72 FF+1d, C-CS-L5-91 | 0d | 667,142.71 |
|  | 7 | **Level 6 - Slab / Columns / Walls** |  | 2015-03-28 | 2015-04-05 |  |  |  |
| C-CS-S-L6-2 |  | FRC PT Slab & Beams Works at Level 6 | 5d | 2015-03-28 | 2015-04-01 | C-CS-S-L5-72 SS+2d, P-CS-SR-383, C-CS-Su-B-CW-682 SS | 0d | 599,080.28 |
| C-CS-S-L6-12 |  | FRC Columns & Walls from L6 to L7 | 3d | 2015-04-02 | 2015-04-05 | C-CS-S-L6-2, C-MEP-Em-82 FF+1d, C-CS-L6-101 | 0d | 671,253.3 |

Notes:
- C-CS-S-MZ-01: Expenses: S 133059
- C-CS-S-MZ-02: Expenses: C 149089
- C-CS-S-L1-01: Expenses: S 908210
- C-CS-S-L1-02: Expenses: C 1017625
- C-CS-S-L1M-2: Expenses: S 438634
- C-CS-S-L1M-12: Expenses: C 491478
- C-CS-S-L2-2: Expenses: S 821821
- C-CS-S-L2-12: Expenses: C 920828
- C-CS-S-L3-22: Expenses: S 794095
- C-CS-S-L3-32: Expenses: C 889762
- C-CS-S-L4-42: Expenses: S 794095
- C-CS-S-L4-52: Expenses: C 889762
- C-CS-S-L5-62: Expenses: S 595412
- C-CS-S-L5-72: Expenses: C 667143
- C-CS-S-L6-2: Expenses: S 599080
- C-CS-S-L6-12: Expenses: C 671253

| ID | WBS | Activity | Duration | Start | Finish | Predecessors | Total float | Cost |
| --- | --- | --- | --- | --- | --- | --- | --- | --- |
|  | 8 | **Level 7 - Slab / Columns / Walls** |  | 2015-04-05 | 2015-04-13 |  |  |  |
| C-CS-S-L7-2 |  | FRC PT Slab & Beams Works at Level 7 | 5d | 2015-04-05 | 2015-04-09 | C-CS-S-L6-12 SS+2d, P-CS-SR-393, C-CS-Su-B-CW-692 SS | 0d | 605,775.04 |
| C-CS-S-L7-12 |  | FRC Columns & Walls from L7 to L8 | 3d | 2015-04-11 | 2015-04-13 | C-CS-S-L7-2, C-MEP-Em-92 FF+1d, C-CS-L7-111 | 0d | 678,754.6 |
|  | 9 | **Level 8 - Slab / Columns / Walls** |  | 2015-04-13 | 2015-04-21 |  |  |  |
| C-CS-S-L8-22 |  | FRC PT Slab & Beams Works at Level 8 | 5d | 2015-04-13 | 2015-04-18 | C-CS-S-L7-12 SS+2d, P-CS-SR-403, C-CS-Su-B-CW-702 SS | 0d | 617,431 |
| C-CS-S-L8-32 |  | FRC Columns & Walls from L8 to L9 | 3d | 2015-04-19 | 2015-04-21 | C-CS-S-L8-22, C-MEP-Em-102 FF+1d, C-CS-L8-121 | 0d | 691,814.78 |
|  | 10 | **Level 9 - Slab / Columns / Walls** |  | 2015-04-21 | 2015-04-29 |  |  |  |
| C-CS-S-L9-42 |  | FRC PT Slab & Beams Works at Level 9 | 5d | 2015-04-21 | 2015-04-26 | C-CS-S-L8-32 SS+2d, P-CS-SR-413, C-CS-Su-B-CW-712 | 0d | 627,585.29 |
| C-CS-S-L9-52 |  | FRC Columns & Walls from L9 to L10 | 3d | 2015-04-27 | 2015-04-29 | C-CS-S-L9-42, C-MEP-Em-112 FF+1d, C-CS-L9-131 | 0d | 703,192.39 |
|  | 11 | **Level 10 - Slab / Columns / Walls** |  | 2015-04-29 | 2015-05-07 |  |  |  |
| C-CS-S-L10-62 |  | FRC PT Slab & Beams Works at Level 10 | 5d | 2015-04-29 | 2015-05-04 | C-CS-S-L9-52 SS+2d, P-CS-SR-423, C-CS-Su-B-CW-722 SS, M-ME-51 FF | 0d | 636,526.84 |
| C-CS-S-L10-72 |  | FRC Columns & Walls from L10 to L11 | 3d | 2015-05-05 | 2015-05-07 | C-CS-S-L10-62, C-MEP-Em-122 FF+1d, C-CS-L10-141 | 0d | 713,211.16 |
|  | 12 | **Level 11 - Slab / Columns / Walls** |  | 2015-05-07 | 2015-05-16 |  |  |  |
| C-CS-S-L11-82 |  | FRC PT Slab & Beams Works at Level 11 | 5d | 2015-05-07 | 2015-05-12 | C-CS-S-L10-72 SS+2d, P-CS-SR-433, C-CS-Su-B-CW-732 SS | 0d | 644,118.8 |
| C-CS-S-L11-92 |  | FRC Columns & Walls from L11 to L12 | 3d | 2015-05-13 | 2015-05-16 | C-CS-S-L11-82, C-MEP-Em-132 FF+1d, C-CS-L11-151 | 0d | 721,717.74 |
|  | 13 | **Level 12 - Slab / Columns / Walls** |  | 2015-05-16 | 2015-05-24 |  |  |  |
| C-CS-S-L12-22 |  | FRC PT Slab & Beams Works at Level 12 | 5d | 2015-05-16 | 2015-05-20 | C-CS-S-L11-92 SS+2d, P-CS-SR-443, C-CS-Su-B-CW-742 SS | 0d | 659,424.36 |
| C-CS-S-L12-32 |  | FRC Columns & Walls from L12 to L13 | 3d | 2015-05-21 | 2015-05-24 | C-CS-S-L12-22, C-MEP-Em-142 FF+1d, C-CS-L12-161 | 0d | 738,867.22 |
|  | 14 | **Level 13 - Slab / Columns / Walls** |  | 2015-05-24 | 2015-06-01 |  |  |  |
| C-CS-S-L13-62 |  | FRC PT Slab & Beams Works at Level 13 | 5d | 2015-05-24 | 2015-05-28 | C-CS-S-L12-32 SS+2d, P-CS-SR-453, C-CS-Su-B-CW-752 SS | 0d | 674,714.73 |
| C-CS-S-L13-72 |  | FRC Columns & Walls from L13 to L14 | 3d | 2015-05-30 | 2015-06-01 | C-CS-S-L13-62, C-MEP-Em-152 FF+1d, C-CS-L13-171 | 0d | 755,999.66 |
|  | 15 | **Level 14 - Slab / Columns / Walls** |  | 2015-06-01 | 2015-06-09 |  |  |  |
| C-CS-S-L14-82 |  | FRC PT Slab & Beams Works at Level 14 | 5d | 2015-06-01 | 2015-06-06 | C-CS-S-L13-72 SS+2d, P-CS-SR-463, C-CS-Su-B-CW-762 SS | 0d | 688,556.65 |
| C-CS-S-L14-92 |  | FRC Columns & Walls from L14 to L15 | 3d | 2015-06-07 | 2015-06-09 | C-CS-S-L14-82, C-MEP-Em-162 FF+1d, C-CS-L14-181 | 0d | 771,509.15 |

Notes:
- C-CS-S-L7-2: Expenses: S 605775
- C-CS-S-L7-12: Expenses: c 678755
- C-CS-S-L8-22: Expenses: S 617431
- C-CS-S-L8-32: Expenses: c 691815
- C-CS-S-L9-42: Expenses: S 627585
- C-CS-S-L9-52: Expenses: c 703192
- C-CS-S-L10-62: Expenses: S 636527
- C-CS-S-L10-72: Expenses: c 713211
- C-CS-S-L11-82: Expenses: S 644119
- C-CS-S-L11-92: Expenses: c 721718
- C-CS-S-L12-22: Expenses: S 659424
- C-CS-S-L12-32: Expenses: c 738867
- C-CS-S-L13-62: Expenses: S 674715
- C-CS-S-L13-72: Expenses: c 756000
- C-CS-S-L14-82: Expenses: S 688557
- C-CS-S-L14-92: Expenses: c 771509

| ID | WBS | Activity | Duration | Start | Finish | Predecessors | Total float | Cost |
| --- | --- | --- | --- | --- | --- | --- | --- | --- |
|  | 16 | **Level 15 - Slab / Columns / Walls** |  | 2015-06-09 | 2015-06-17 |  |  |  |
| C-CS-S-L15-102 |  | FRC PT Slab & Beams Works at Level 15 | 5d | 2015-06-09 | 2015-06-14 | C-CS-S-L14-92 SS+2d, P-CS-SR-473, C-CS-Su-B-CW-782, C-CS-Su-B-CW-772 SS, M-ME-61 FF | 0d | 755,481.44 |
| C-CS-S-L15-112 |  | FRC Columns & Walls from L15 to L16 | 3d | 2015-06-15 | 2015-06-17 | C-CS-S-L15-102, C-MEP-Em-172 FF+1d, C-CS-L15-191 | 0d | 846,496.58 |
|  | 17 | **Level 16 - Slab / Columns / Walls** |  | 2015-06-17 | 2015-06-25 |  |  |  |
| C-CS-S-L16-22 |  | FRC PT Slab & Beams Works at Level 16 | 5d | 2015-06-17 | 2015-06-22 | C-CS-S-L15-112 SS+2d, P-CS-SR-493, C-CS-Su-B-CW-792 | 0d | 768,042.19 |
| C-CS-S-L16-32 |  | FRC Columns & Walls from L16 to L17 | 3d | 2015-06-23 | 2015-06-25 | C-CS-S-L16-22, C-MEP-Em-182 FF+1d, C-CS-L16-201 | 0d | 860,570.56 |
|  | 18 | **Level 17 - Slab / Columns / Walls** |  | 2015-06-25 | 2015-07-04 |  |  |  |
| C-CS-S-L17-42 |  | FRC PT Slab & Beams Works at Level 17 | 5d | 2015-06-25 | 2015-06-30 | C-CS-S-L16-32 SS+2d, P-CS-SR-543, C-CS-Su-B-CW-802 | 0d | 774,953.65 |
| C-CS-S-L17-52 |  | FRC Columns & Walls from L17 to L18 | 3d | 2015-07-01 | 2015-07-04 | C-CS-S-L17-42, C-MEP-Em-192 FF+1d, C-CS-L17-211 | 0d | 868,314.66 |
|  | 19 | **Level 18 - Slab / Columns / Walls** |  | 2015-07-05 | 2015-07-14 |  |  |  |
| C-CS-S-L18-62 |  | FRC PT Slab & Beams Works at Level 18 | 6d | 2015-07-05 | 2015-07-11 | C-CS-S-L17-52 SS+2d, P-CS-SR-553, C-CS-Su-B-CW-812, C-CS-S-T-421 SS+2d, C-CS-S-T-431 | 0d | 788,825.98 |
| C-CS-S-L18-72 |  | FRC Columns & Walls from L18 to L19 | 3d | 2015-07-12 | 2015-07-14 | C-CS-S-L18-62, C-MEP-Em-202 FF+1d, C-CS-L18-221 | 0d | 883,858.24 |
|  | 20 | **Level 19 - Slab / Columns / Walls** |  | 2015-07-14 | 2015-07-25 |  |  |  |
| C-CS-S-L19-82 |  | FRC PT Slab & Beams Works at Level 19 | 5d | 2015-07-14 | 2015-07-21 | C-CS-S-L18-72 SS+2d, P-CS-SR-563, C-CS-Su-B-CW-822 | 0d | 796,790.5 |
| C-CS-S-L19-92 |  | FRC Columns & Walls from L19 to L20 | 3d | 2015-07-22 | 2015-07-25 | C-CS-S-L19-82, C-MEP-Em-212 FF+1d, C-CS-L19-231 | 0d | 892,782.27 |
|  | 21 | **Level 20- Slab / Columns / Walls** |  | 2015-07-25 | 2015-08-02 |  |  |  |
| C-CS-S-L20-102 |  | FRC PT Slab & Beams Works at Level 20 | 5d | 2015-07-25 | 2015-07-29 | C-CS-S-L19-92 SS+2d, P-CS-SR-573, C-CS-Su-B-CW-832 | 0d | 803,162.12 |
| C-CS-S-L20-112 |  | FRC Columns & Walls from L20 to L21 | 3d | 2015-07-30 | 2015-08-02 | C-CS-S-L20-102, C-MEP-Em-222 FF+1d, C-CS-L20-241 | 0d | 899,921.5 |
|  | 22 | **Level 21 - Slab / Columns / Walls** |  | 2015-08-02 | 2015-08-10 |  |  |  |
| C-CS-S-L21-122 |  | FRC PT Slab & Beams Works at Level 21 | 5d | 2015-08-02 | 2015-08-06 | C-CS-S-L20-112 SS+2d, P-CS-SR-583, C-CS-Su-B-CW-842 | 0d | 807,948.43 |
| C-CS-S-L21-132 |  | FRC Columns & Walls from L21 to L22 | 3d | 2015-08-08 | 2015-08-10 | C-CS-S-L21-122, C-MEP-Em-232 FF+1d, C-CS-L21-251 | 0d | 905,284.43 |
|  | 23 | **Level 22 - Slab / Columns / Walls** |  | 2015-08-10 | 2015-08-18 |  |  |  |
| C-CS-S-L22-42 |  | FRC PT Slab & Beams Works at Level 22 | 5d | 2015-08-10 | 2015-08-15 | C-CS-S-L21-132 SS+2d, P-CS-SR-593, C-CS-Su-B-CW-852 | 0d | 810,830.11 |
| C-CS-S-L22-52 |  | FRC Columns & Walls from L22 to L23 | 3d | 2015-08-16 | 2015-08-18 | C-CS-S-L22-42, C-MEP-Em-242 FF+1d, C-CS-L22-261 | 0d | 908,513.27 |

Notes:
- C-CS-S-L15-102: Expenses: S 755481
- C-CS-S-L15-112: Expenses: c 846497
- C-CS-S-L16-22: Expenses: S 768042
- C-CS-S-L16-32: Expenses: c 860571
- C-CS-S-L17-42: Expenses: S 774954
- C-CS-S-L17-52: Expenses: c 868315
- C-CS-S-L18-62: Expenses: S 788826
- C-CS-S-L18-72: Expenses: c 883858
- C-CS-S-L19-82: Expenses: S 796790
- C-CS-S-L19-92: Expenses: c 892782
- C-CS-S-L20-102: Expenses: S 803162
- C-CS-S-L20-112: Expenses: c 899922
- C-CS-S-L21-122: Expenses: S 807948
- C-CS-S-L21-132: Expenses: c 905284
- C-CS-S-L22-42: Expenses: S 810830
- C-CS-S-L22-52: Expenses: c 908513

| ID | WBS | Activity | Duration | Start | Finish | Predecessors | Total float | Cost |
| --- | --- | --- | --- | --- | --- | --- | --- | --- |
|  | 24 | **Level 23 - Slab / Columns / Walls** |  | 2015-08-18 | 2015-08-25 |  |  |  |
| C-CS-S-L23-2 |  | FRC PT Slab & Beams Works at Level 23 | 4d | 2015-08-18 | 2015-08-22 | C-CS-S-L22-52 SS+2d, P-CS-SR-603, C-CS-Su-B-CW-862 | 0d | 812,985.66 |
| C-CS-S-L23-12 |  | FRC Columns & Walls from L23 to L24 | 3d | 2015-08-23 | 2015-08-25 | C-CS-S-L23-2, C-MEP-Em-252 FF+1d, C-CS-L23-271 | 0d | 910,928.51 |
|  | 45 | **Level 24 - Slab / Columns / Walls** |  | 2015-08-25 | 2015-09-01 |  |  |  |
| C-CS-S-L24-22 |  | FRC PT Slab & Beams Works at Level 24 | 4d | 2015-08-25 | 2015-08-29 | C-CS-S-L23-12 SS+2d, P-CS-SR-613, C-CS-Su-B-CW-872 | 0d | 812,856.4 |
| C-CS-S-L24-32 |  | FRC Columns & Walls from L24 to L25 | 3d | 2015-08-30 | 2015-09-01 | C-CS-S-L24-22, C-MEP-Em-253 FF+1d, C-CS-L24-281 | 0d | 910,783.68 |
|  | 44 | **Level 25 - Slab / Columns / Walls** |  | 2015-09-01 | 2015-09-08 |  |  |  |
| C-CS-S-L25-42 |  | FRC PT Slab & Beams Works at Level 25 | 4d | 2015-09-01 | 2015-09-05 | C-CS-S-L24-32 SS+2d, P-CS-SR-623, C-CS-Su-B-CW-882 | 0d | 811,339.53 |
| C-CS-S-L25-52 |  | FRC Columns & Walls from L25 to L26 | 3d | 2015-09-06 | 2015-09-08 | C-CS-S-L25-42, C-MEP-Em-272 FF+1d, C-CS-L25-280 | 0d | 909,084.07 |
|  | 43 | **Level 26 - Slab / Columns / Walls** |  | 2015-09-08 | 2015-09-15 |  |  |  |
| C-CS-S-L26-62 |  | FRC PT Slab & Beams Works at Level 26 | 4d | 2015-09-08 | 2015-09-12 | C-CS-S-L25-52 SS+2d, P-CS-SR-633, C-CS-Su-B-CW-892 | 0d | 808,366.62 |
| C-CS-S-L26-72 |  | FRC Columns & Walls from L26 to L27 | 3d | 2015-09-13 | 2015-09-15 | C-CS-S-L26-62, C-MEP-Em-282 FF+1d, C-CS-L26-61 | 0d | 905,753 |
|  | 42 | **Level 27 - Slab / Columns / Walls** |  | 2015-09-15 | 2015-09-26 |  |  |  |
| C-CS-S-L27-82 |  | FRC PT Slab & Beams Works at Level 27 | 4d | 2015-09-15 | 2015-09-19 | C-CS-S-L26-72 SS+2d, P-CS-SR-643, C-CS-Su-B-CW-902 | 0d | 803,728.57 |
| C-CS-S-L27-92 |  | FRC Columns & Walls from L27 to L28 | 3d | 2015-09-23 | 2015-09-26 | C-CS-S-L27-82, C-MEP-Em-292 FF+1d, C-CS-L27-71 | 0d | 900,556.19 |
|  | 41 | **Level 28 - Slab / Columns / Walls** |  | 2015-09-26 | 2015-10-03 |  |  |  |
| C-CS-S-L28-22 |  | FRC PT Slab & Beams Works at Level 28 | 4d | 2015-09-26 | 2015-09-29 | C-CS-S-L27-92 SS+2d, P-CS-SR-653, C-CS-Su-B-CW-912 | 0d | 797,421.58 |
| C-CS-S-L28-32 |  | FRC Columns & Walls from L28 to L29 | 3d | 2015-09-30 | 2015-10-03 | C-CS-S-L28-22, C-MEP-Em-302 FF+1d, C-CS-L28-81 | 0d | 893,489.38 |
|  | 40 | **Level 29 - Slab / Columns / Walls** |  | 2015-10-03 | 2015-10-10 |  |  |  |
| C-CS-S-L29-22 |  | FRC PT Slab & Beams Works at Level 29 | 4d | 2015-10-03 | 2015-10-06 | C-CS-S-L28-32 SS+2d, P-CS-SR-663, C-CS-Su-B-CW-922 | 0d | 758,747.08 |
| C-CS-S-L29-32 |  | FRC Columns & Walls from L29 to L30 | 3d | 2015-10-07 | 2015-10-10 | C-CS-S-L29-22, C-MEP-Em-312 FF+1d, C-CS-L29-91 | 0d | 850,155.64 |
|  | 39 | **Level 30 - Slab / Columns / Walls** |  | 2015-10-10 | 2015-10-17 |  |  |  |
| C-CS-S-L30-42 |  | FRC PT Slab & Beams Works at Level 30 | 4d | 2015-10-10 | 2015-10-13 | C-CS-S-L29-32 SS+2d, P-CS-SR-673, C-CS-Su-B-CW-932 | 0d | 780,519.31 |
| C-CS-S-L30-52 |  | FRC Columns & Walls from L30 to L31 | 3d | 2015-10-14 | 2015-10-17 | C-CS-S-L30-42, C-MEP-Em-322 FF+1d, C-CS-L30-101 | 0d | 874,550.84 |

Notes:
- C-CS-S-L23-2: Expenses: S 812986
- C-CS-S-L23-12: Expenses: c 910929
- C-CS-S-L24-22: Expenses: S 812856
- C-CS-S-L24-32: Expenses: C 910784
- C-CS-S-L25-42: Expenses: S 811340
- C-CS-S-L25-52: Expenses: c 909084
- C-CS-S-L26-62: Expenses: S 808367
- C-CS-S-L26-72: Expenses: c 905753
- C-CS-S-L27-82: Expenses: S 803729
- C-CS-S-L27-92: Expenses: c 900556
- C-CS-S-L28-22: Expenses: S 797422
- C-CS-S-L28-32: Expenses: c 893489
- C-CS-S-L29-22: Expenses: S 758747
- C-CS-S-L29-32: Expenses: c 850156
- C-CS-S-L30-42: Expenses: S 780519
- C-CS-S-L30-52: Expenses: c 874551

| ID | WBS | Activity | Duration | Start | Finish | Predecessors | Total float | Cost |
| --- | --- | --- | --- | --- | --- | --- | --- | --- |
|  | 38 | **Level 31 - Slab / Columns / Walls** |  | 2015-10-17 | 2015-10-24 |  |  |  |
| C-CS-S-L31-62 |  | FRC PT Slab & Beams Works at Level 31 | 4d | 2015-10-17 | 2015-10-20 | C-CS-S-L30-52 SS+2d, P-CS-SR-683, C-CS-Su-B-CW-942 | 0d | 675,243.16 |
| C-CS-S-L31-72 |  | FRC Columns & Walls from L31 to L32 | 3d | 2015-10-21 | 2015-10-24 | C-CS-S-L31-62, C-MEP-Em-332 FF+1d, C-CS-L31-111 | 0d | 756,591.75 |
|  | 37 | **Level 32 - Slab / Columns / Walls** |  | 2015-10-24 | 2015-11-01 |  |  |  |
| C-CS-S-L32-82 |  | FRC PT Slab & Beams Works at Level 32 | 5d | 2015-10-24 | 2015-10-28 | C-CS-S-L31-72 SS+2d, P-CS-SR-693, C-CS-Su-B-CW-952 | 0d | 871,345.27 |
| C-CS-S-L32-92 |  | FRC Columns & Walls from L32 to L33 | 3d | 2015-10-29 | 2015-11-01 | C-CS-S-L32-82, C-MEP-Em-342 FF+1d, C-CS-L32-121 | 0d | 976,318.87 |
|  | 36 | **Level 33 - Slab / Columns / Walls** |  | 2015-11-02 | 2015-11-10 |  |  |  |
| C-CS-S-L33-102 |  | FRC PT Slab & Beams Works at Level 33 | 5d | 2015-11-02 | 2015-11-07 | C-CS-S-L32-92 SS+2d, P-CS-SR-703, C-CS-Su-B-CW-962, C-CS-S-T-451 SS+2d, C-CS-S-T-461 | 0d | 921,934.23 |
| C-CS-S-L33-112 |  | FRC Columns & Walls from L33 to L34 | 3d | 2015-11-08 | 2015-11-10 | C-CS-S-L33-102, C-MEP-Em-352 FF+1d, C-CS-L33-131 | 0d | 1,033,002.45 |
|  | 35 | **Level 34 - Slab / Columns / Walls** |  | 2015-11-10 | 2015-11-17 |  |  |  |
| C-CS-S-L34-42 |  | FRC PT Slab & Beams Works at Level 34 | 4d | 2015-11-10 | 2015-11-14 | C-CS-S-L33-112 SS+2d, P-CS-SR-713, C-SS-SC-L33-84 SS+1d, C-CS-Su-B-CW-972 | 0d | 524,787.84 |
| C-CS-S-L34-52 |  | FRC Columns & Walls from L34 to L35 | 3d | 2015-11-15 | 2015-11-17 | C-CS-S-L34-42, C-MEP-Em-362 FF+1d, C-CS-L34-141 | 0d | 588,010.62 |
|  | 34 | **Level 35 - Slab / Columns / Walls** |  | 2015-11-17 | 2015-11-24 |  |  |  |
| C-CS-S-L35-82 |  | FRC PT Slab & Beams Works at Level 35 | 4d | 2015-11-17 | 2015-11-21 | C-CS-S-L34-52 SS+2d, P-CS-SR-723, C-CS-Su-B-CW-982 | 0d | 634,899.72 |
| C-CS-S-L35-92 |  | FRC Columns & Walls from L35 to L36 | 3d | 2015-11-22 | 2015-11-24 | C-CS-S-L35-82, C-MEP-Em-372 FF+1d, C-CS-L35-151 | 0d | 711,388.02 |
|  | 33 | **Level 36 - Slab / Columns / Walls** |  | 2015-11-24 | 2015-12-01 |  |  |  |
| C-CS-S-L36-102 |  | FRC PT Slab & Beams Works at Level 36 | 4d | 2015-11-24 | 2015-11-28 | C-CS-S-L35-92 SS+2d, P-CS-SR-733, C-CS-Su-B-CW-992 | 0d | 622,468.22 |
| C-CS-S-L36-112 |  | FRC Columns & Walls from L36 to L37 | 3d | 2015-11-29 | 2015-12-01 | C-CS-S-L36-102, C-MEP-Em-382 FF+1d, C-CS-L36-161 | 0d | 697,458.86 |
|  | 32 | **Level 37 - Slab / Columns / Walls** |  | 2015-12-01 | 2015-12-08 |  |  |  |
| C-CS-S-L37-122 |  | FRC PT Slab & Beams Works at Level 37 | 4d | 2015-12-01 | 2015-12-05 | C-CS-S-L36-112 SS+2d, P-CS-SR-743, C-CS-Su-B-CW-1002 | 0d | 605,645.79 |
| C-CS-S-L37-132 |  | FRC Columns & Walls from L37 to L38 | 3d | 2015-12-06 | 2015-12-08 | C-CS-S-L37-122, C-MEP-Em-392 FF+1d, C-CS-L37-171 | 0d | 678,609.77 |
|  | 31 | **Level 38 - Slab / Columns / Walls** |  | 2015-12-08 | 2015-12-15 |  |  |  |
| C-CS-S-L38-42 |  | FRC PT Slab & Beams Works at Level 38 | 4d | 2015-12-08 | 2015-12-12 | C-CS-S-L37-132 SS+2d, P-CS-SR-753, C-CS-Su-B-CW-1012 | 0d | 586,759.04 |
| C-CS-S-L38-52 |  | FRC Columns & Walls from L38 to L39 | 3d | 2015-12-13 | 2015-12-15 | C-CS-S-L38-42, C-MEP-Em-402 FF+1d, C-CS-L38-181 | 0d | 657,447.68 |

Notes:
- C-CS-S-L31-62: Expenses: S 675243
- C-CS-S-L31-72: Expenses: c 756592
- C-CS-S-L32-82: Expenses: S 871345
- C-CS-S-L32-92: Expenses: c 976319
- C-CS-S-L33-102: Expenses: S 921934
- C-CS-S-L33-112: Expenses: c 1033002
- C-CS-S-L34-42: Expenses: S 524788
- C-CS-S-L34-52: Expenses: c 588011
- C-CS-S-L35-82: Expenses: S 634900
- C-CS-S-L35-92: Expenses: c 711388
- C-CS-S-L36-102: Expenses: S 622468
- C-CS-S-L36-112: Expenses: C 697459
- C-CS-S-L37-122: Expenses: S 605646
- C-CS-S-L37-132: Expenses: C 678610
- C-CS-S-L38-42: Expenses: S 586759
- C-CS-S-L38-52: Expenses: C 657448

| ID | WBS | Activity | Duration | Start | Finish | Predecessors | Total float | Cost |
| --- | --- | --- | --- | --- | --- | --- | --- | --- |
|  | 30 | **Level 39 - Slab / Columns / Walls** |  | 2015-12-15 | 2015-12-23 |  |  |  |
| C-CS-S-L39-62 |  | FRC PT Slab & Beams Works at Level 39 | 4d | 2015-12-15 | 2015-12-20 | C-CS-S-L38-52 SS+2d, P-CS-SR-763, C-CS-Su-B-CW-1022 | 0d | 565,731.94 |
| C-CS-S-L39-72 |  | FRC Columns & Walls from L39 to L40 | 3d | 2015-12-21 | 2015-12-23 | C-CS-S-L39-62, C-MEP-Em-412 FF+1d, C-CS-L39-191 | 0d | 633,887.38 |
|  | 29 | **Level 40 - Slab / Columns / Walls** |  | 2015-12-23 | 2015-12-30 |  |  |  |
| C-CS-S-L40-82 |  | FRC PT Slab & Beams Works at Level 40 | 4d | 2015-12-23 | 2015-12-27 | C-CS-S-L39-72 SS+2d, P-CS-SR-773, C-CS-Su-B-CW-1032 SS | 0d | 542,435.24 |
| C-CS-S-L40-92 |  | FRC Columns & Walls from L40 to L41 | 3d | 2015-12-28 | 2015-12-30 | C-CS-S-L40-82, C-MEP-Em-422 FF+1d, C-CS-L40-201 | 0d | 607,784.06 |
|  | 28 | **Level 41- Slab / Columns / Walls** |  | 2015-12-30 | 2016-01-06 |  |  |  |
| C-CS-S-L41-102 |  | FRC PT Slab & Beams Works at Level 41 | 4d | 2015-12-30 | 2016-01-03 | C-CS-S-L40-92 SS+2d, P-CS-SR-783, C-CS-Su-B-CW-1042 SS | 0d | 516,994.39 |
| C-CS-S-L41-112 |  | FRC Columns & Walls from L41 to L42 | 3d | 2016-01-04 | 2016-01-06 | C-CS-S-L41-102, C-MEP-Em-432 FF+1d, C-CS-L41-211 | 0d | 579,278.27 |
|  | 27 | **Level 42- Slab / Columns / Walls** |  | 2016-01-06 | 2016-01-13 |  |  |  |
| C-CS-S-L42-122 |  | FRC PT Slab & Beams Works at Level 42 | 4d | 2016-01-06 | 2016-01-10 | C-CS-S-L41-112 SS+2d, P-CS-SR-793, C-CS-Su-B-CW-1052 SS | 0d | 489,394.19 |
| C-CS-S-L42-132 |  | FRC Columns & Walls from L42 to L43 | 3d | 2016-01-11 | 2016-01-13 | C-CS-S-L42-122, C-MEP-Em-442 FF+1d, C-CS-L42-221 | 0d | 548,352.99 |
|  | 26 | **Level 43 - Slab / Columns / Walls** |  | 2016-01-13 | 2016-01-20 |  |  |  |
| C-CS-S-L43-142 |  | FRC PT Slab & Beams Works at Level 43 | 4d | 2016-01-13 | 2016-01-17 | C-CS-S-L42-132 SS+2d, P-CS-SR-803, C-CS-Su-B-CW-1062 SS | 0d | 459,528.18 |
| C-CS-S-L43-152 |  | FRC Columns & Walls from L43 to L44 | 3d | 2016-01-18 | 2016-01-20 | C-CS-S-L43-142, C-MEP-Em-452 FF+1d, C-CS-L43-231 | 0d | 514,888.93 |
|  | 25 | **Level 44 - Slab / Columns / Walls** |  | 2016-01-20 | 2016-01-27 |  |  |  |
| C-CS-S-L44-62 |  | FRC PT Slab & Beams Works at Level 44 | 4d | 2016-01-20 | 2016-01-24 | C-CS-S-L43-152 SS+2d, P-CS-SR-813, C-CS-Su-B-CW-1072 SS | 0d | 408,376.56 |
| C-CS-S-L45-72 |  | FRC Columns & Walls from L44 to L45 | 3d | 2016-01-25 | 2016-01-27 | C-CS-S-L44-62, C-MEP-Em-462 FF+1d, C-CS-L44-241 | 0d | 457,574.93 |
|  | 46 | **Level 45 - Slab / Columns / Walls** |  | 2016-01-27 | 2016-02-03 |  |  |  |
| C-CS-S-L40-102 |  | FRC PT Slab & Beams Works at Level 45 | 4d | 2016-01-27 | 2016-01-31 | C-CS-S-L45-72 SS+2d, P-CS-SR-823, C-CS-Su-B-CW-1082 SS | 0d | 393,093.81 |
| C-CS-S-L40-112 |  | FRC Columns & Walls from L45 to L46 | 3d | 2016-02-01 | 2016-02-03 | C-CS-S-L40-102, C-MEP-Em-472 FF+1d, C-CS-L45-291 | 0d | 440,451.01 |
|  | 50 | **Level 46- Slab / Columns / Walls** |  | 2016-02-03 | 2016-02-11 |  |  |  |
| C-CS-S-L41-122 |  | FRC PT Slab & Beams Works at Level 46 | 4d | 2016-02-03 | 2016-02-07 | C-CS-S-L40-112 SS+2d, P-CS-SR-833, C-CS-Su-B-CW-1092 SS | 0d | 356,331.55 |
| C-CS-S-L41-132 |  | FRC Columns & Walls from L46 to L47 | 3d | 2016-02-08 | 2016-02-11 | C-CS-S-L41-122, C-MEP-Em-482 FF+1d, C-CS-L46-301 | 0d | 399,259.9 |

Notes:
- C-CS-S-L39-62: Expenses: S 565732
- C-CS-S-L39-72: Expenses: c 633887
- C-CS-S-L40-82: Expenses: S 542435
- C-CS-S-L40-92: Expenses: c 607784
- C-CS-S-L41-102: Expenses: S 516994
- C-CS-S-L41-112: Expenses: c 579278
- C-CS-S-L42-122: Expenses: S 489394
- C-CS-S-L42-132: Expenses: c 548353
- C-CS-S-L43-142: Expenses: S 459528
- C-CS-S-L43-152: Expenses: d 514889
- C-CS-S-L44-62: Expenses: S 408377
- C-CS-S-L45-72: Expenses: c 457575
- C-CS-S-L40-102: Expenses: S 393094
- C-CS-S-L40-112: Expenses: d 440451
- C-CS-S-L41-122: Expenses: S 356332
- C-CS-S-L41-132: Expenses: c 399260

| ID | WBS | Activity | Duration | Start | Finish | Predecessors | Total float | Free float | Cost |
| --- | --- | --- | --- | --- | --- | --- | --- | --- | --- |
|  | 49 | **Level 47- Slab / Columns / Walls** |  | 2016-02-11 | 2016-02-18 |  |  |  |  |
| C-CS-S-L42-142 |  | FRC PT Slab & Beams Works at Level 47 | 4d | 2016-02-11 | 2016-02-15 | C-CS-S-L41-132 SS+2d, P-CS-SR-843 | 0d |  | 317,178.04 |
| C-CS-S-L42-152 |  | FRC Columns & Walls from L47 to L48 | 3d | 2016-02-16 | 2016-02-18 | C-CS-S-L42-142, C-MEP-Em-492 FF+1d, C-CS-L47-311 | 0d |  | 355,389.44 |
|  | 48 | **Level 48 - Slab / Columns / Walls** |  | 2016-02-18 | 2016-02-25 |  |  |  |  |
| C-CS-S-L43-162 |  | FRC PT Slab & Beams Works at Level 48 | 4d | 2016-02-18 | 2016-02-22 | C-CS-S-L42-152 SS+2d, P-CS-SR-853, C-CS-Su-B-CW-1112 SS, C-CS-Su-B-CW-1102 SS | 0d |  | 303,381.74 |
| C-CS-S-L43-172 |  | FRC Columns & Walls from L48 to L49 | 3d | 2016-02-23 | 2016-02-25 | C-CS-S-L43-162, C-MEP-Em-502 FF+1d, C-CS-L48-321 | 0d |  | 339,931.06 |
|  | 47 | **Level 49 - Slab / Columns / Walls** |  | 2016-02-25 | 2016-03-03 |  |  |  |  |
| C-CS-S-L44-72 |  | FRC PT Slab & Beams Works at Level 49 | 4d | 2016-02-25 | 2016-02-29 | C-CS-S-L43-172 SS+2d, P-CS-SR-863 | 0d |  | 317,044.98 |
| C-CS-S-L45-82 |  | FRC Columns & Walls from L49 to L50 | 3d | 2016-03-01 | 2016-03-03 | C-CS-S-L44-72, C-MEP-Em-512 FF+1d, C-CS-L49-331 | 0d |  | 355,240.35 |
|  | 54 | **Level 50- Slab / Columns / Walls** |  | 2016-03-05 | 2016-03-12 |  |  |  |  |
| C-CS-S-L41-142 |  | FRC PT Slab & Beams Works at Level 50 | 4d | 2016-03-05 | 2016-03-08 | C-CS-S-L45-82 SS+2d, P-CS-SR-873, C-CS-Su-B-CW-1122 SS, C-CS-S-T-481 SS+2d, C-CS-S-T-491 | 0d |  | 326,967.37 |
| C-CS-S-L41-152 |  | FRC Columns & Walls from L50 to L51 | 3d | 2016-03-09 | 2016-03-12 | C-CS-S-L41-142, C-MEP-Em-522 FF+1d, C-CS-L50-341 | 0d |  | 366,358.12 |
|  | 53 | **Level 51- Slab / Columns / Walls** |  | 2016-03-12 | 2016-03-19 |  |  |  |  |
| C-CS-S-L42-162 |  | FRC PT Slab & Beams Works at Level 51 | 4d | 2016-03-12 | 2016-03-15 | C-CS-S-L41-152 SS+2d, P-CS-SR-883 | 0d |  | 285,255.33 |
| C-CS-S-L42-172 |  | FRC Columns & Walls from L51 to Lower Roof | 3d | 2016-03-16 | 2016-03-19 | C-CS-S-L42-162, C-MEP-Em-532 FF, C-CS-L51-351 | 0d |  | 319,620.9 |
|  | 52 | **Lower Roof - Slab / Columns / Walls** |  | 2016-03-19 | 2016-03-26 |  |  |  |  |
| C-CS-S-L43-182 |  | FRC PT Slab & Beams Works at Lower Roof | 4d | 2016-03-19 | 2016-03-22 | C-CS-S-L42-172 SS+2d, P-CS-SR-893 | 0d |  | 171,153.2 |
| C-CS-S-L43-192 |  | FRC Columns & Walls from LR to TR | 3d | 2016-03-23 | 2016-03-26 | C-CS-S-L43-182, C-MEP-Em-542 FF+1d, C-CS-LR-341 | 0d |  | 191,772.54 |
|  | 51 | **Top Roof - Slab / Columns / Walls** |  | 2016-03-26 | 2016-03-30 |  |  |  |  |
| C-CS-S-L44-82 |  | FRC PT Slab & Beams Works at Top Roof | 5d | 2016-03-26 | 2016-03-30 | C-CS-S-L43-192 SS+2d, P-CS-SR-903 | 0d |  | 190,084.05 |
|  | 1 | **Stair Steps & Landing** |  | 2015-03-02 | 2016-03-21 |  |  |  |  |
|  | 1 | **Stair 1** |  | 2015-03-02 | 2016-03-14 |  |  |  |  |
| C-CS-S-A-ST-602 |  | FRC Stairs & Landing "ST-01" from GF level to MZ level | 6d | 2015-03-02 | 2015-03-08 | C-CS-Su-A-CW-142 | 88d | 0d | 16,489.92 |
| C-CS-S-A-ST-612 |  | FRC Stairs & Landing "ST-01" from MZ level to L1 | 6d | 2015-03-09 | 2015-03-15 | C-CS-S-A-ST-602 | 88d | 0d | 16,489.92 |
| C-CS-S-A-ST-622 |  | FRC Stairs & Landing "ST-01" from L1 to L2 | 6d | 2015-03-16 | 2015-03-22 | C-CS-S-A-ST-612 | 88d | 0d | 16,489.92 |
| C-CS-S-A-ST-632 |  | FRC Stairs & Landing "ST-01" from L2 to L3 | 6d | 2015-03-23 | 2015-03-29 | C-CS-S-A-ST-622 | 88d | 0d | 16,489.92 |
| C-CS-S-A-ST-642 |  | FRC Stairs & Landing "ST-01" from L3 to L4 | 6d | 2015-03-30 | 2015-04-05 | C-CS-S-A-ST-632 | 88d | 0d | 16,489.92 |
| C-CS-S-A-ST-652 |  | FRC Stairs & Landing "ST-01" from L4 to L5 | 6d | 2015-04-06 | 2015-04-12 | C-CS-S-A-ST-642 | 88d | 0d | 16,489.92 |
| C-CS-S-A-ST--662 |  | FRC Stairs & Landing "ST-01" from L5 to L6 | 6d | 2015-04-13 | 2015-04-19 | C-CS-S-A-ST-652 | 88d | 0d | 16,489.92 |
| C-CS-S-A-ST-672 |  | FRC Stairs & Landing "ST-01" from L6 to L7 | 6d | 2015-04-20 | 2015-04-26 | C-CS-S-A-ST--662 | 88d | 0d | 16,489.92 |
| C-CS-S-A-ST-682 |  | FRC Stairs & Landing "ST-01" from L7 to L8 | 6d | 2015-04-27 | 2015-05-03 | C-CS-S-A-ST-672 | 88d | 0d | 16,489.92 |
| C-CS-S-A-ST-692 |  | FRC Stairs & Landing "ST-01" from L8 to L9 | 6d | 2015-05-04 | 2015-05-10 | C-CS-S-A-ST-682 | 88d | 0d | 16,489.92 |
| C-CS-S-A-ST-702 |  | FRC Stairs & Landing "ST-01" from L9 to L10 | 6d | 2015-05-11 | 2015-05-17 | C-CS-S-A-ST-692 | 88d | 0d | 16,489.92 |
| C-CS-S-A-ST-712 |  | FRC Stairs & Landing "ST-01" from L10 to L11 | 6d | 2015-05-18 | 2015-05-24 | C-CS-S-A-ST-702 | 88d | 0d | 16,489.92 |
| C-CS-S-A-ST-722 |  | FRC Stairs & Landing "ST-01" from L11 to L12 | 6d | 2015-05-25 | 2015-05-31 | C-CS-S-A-ST-712 | 88d | 0d | 16,489.92 |
| C-CS-S-A-ST-732 |  | FRC Stairs & Landing "ST-01" from L12 to L13 | 6d | 2015-06-01 | 2015-06-07 | C-CS-S-A-ST-722 | 88d | 0d | 16,489.92 |
| C-CS-S-A-ST-742 |  | FRC Stairs & Landing "ST-01" from L13 to L14 | 6d | 2015-06-08 | 2015-06-14 | C-CS-S-A-ST-732 | 88d | 0d | 16,489.92 |
| C-CS-S-A-ST-752 |  | FRC Stairs & Landing "ST-01" from L14 to L15 | 6d | 2015-06-15 | 2015-06-21 | C-CS-S-A-ST-742 | 88d | 0d | 16,489.92 |
| C-CS-S-A-ST-762 |  | FRC Stairs & Landing "ST-01" from L15 to L16 | 6d | 2015-06-22 | 2015-06-28 | C-CS-S-A-ST-752 | 88d | 0d | 16,489.92 |
| C-CS-S-A-ST-772 |  | FRC Stairs & Landing "ST-01" from L16 to L17 | 6d | 2015-06-29 | 2015-07-05 | C-CS-S-A-ST-762 | 88d | 0d | 16,489.92 |
| C-CS-S-A-ST-782 |  | FRC Stairs & Landing "ST-01" from L17 to L18 | 6d | 2015-07-06 | 2015-07-12 | C-CS-S-A-ST-772 | 88d | 0d | 16,489.92 |
| C-CS-S-A-ST-792 |  | FRC Stairs & Landing "ST-01" from L18 to L19 | 6d | 2015-07-13 | 2015-07-21 | C-CS-S-A-ST-782 | 88d | 0d | 16,489.92 |
| C-CS-S-A-ST--802 |  | FRC Stairs & Landing "ST-01" from L19 to L20 | 6d | 2015-07-22 | 2015-07-28 | C-CS-S-A-ST-792 | 88d | 0d | 16,489.92 |
| C-CS-S-A-ST-812 |  | FRC Stairs & Landing "ST-01" from L20 to L21 | 6d | 2015-07-29 | 2015-08-04 | C-CS-S-A-ST--802 | 88d | 0d | 16,489.92 |
| C-CS-S-A-ST-822 |  | FRC Stairs & Landing "ST-01" from L21 to L22 | 6d | 2015-08-05 | 2015-08-11 | C-CS-S-A-ST-812 | 88d | 0d | 16,489.92 |
| C-CS-S-A-ST-832 |  | FRC Stairs & Landing "ST-01" from L22 to L23 | 6d | 2015-08-12 | 2015-08-18 | C-CS-S-A-ST-822 | 88d | 0d | 16,489.92 |
| C-CS-S-A-ST-842 |  | FRC Stairs & Landing "ST-01" from L23 to L24 | 6d | 2015-08-19 | 2015-08-25 | C-CS-S-A-ST-832 | 88d | 0d | 16,489.92 |
| C-CS-S-A-ST-852 |  | FRC Stairs & Landing "ST-01" from L24 to L25 | 6d | 2015-08-26 | 2015-09-01 | C-CS-S-A-ST-842 | 88d | 0d | 16,489.92 |
| C-CS-S-A-ST-862 |  | FRC Stairs & Landing "ST-01" from L25 to L26 | 6d | 2015-09-02 | 2015-09-08 | C-CS-S-A-ST-852 | 88d | 0d | 16,489.92 |
| C-CS-S-A-ST-872 |  | FRC Stairs & Landing "ST-01" from L26 to L27 | 6d | 2015-09-09 | 2015-09-15 | C-CS-S-A-ST-862 | 88d | 0d | 16,489.92 |
| C-CS-S-A-ST-882 |  | FRC Stairs & Landing "ST-01" from L27 to L28 | 6d | 2015-09-16 | 2015-09-26 | C-CS-S-A-ST-872 | 88d | 0d | 16,489.92 |
| C-CS-S-A-ST-892 |  | FRC Stairs & Landing "ST-01" from L28 to L29 | 6d | 2015-09-27 | 2015-10-03 | C-CS-S-A-ST-882 | 88d | 0d | 16,489.92 |
| C-CS-S-A-ST-902 |  | FRC Stairs & Landing "ST-01" from L29 to L30 | 6d | 2015-10-04 | 2015-10-10 | C-CS-S-A-ST-892 | 88d | 0d | 16,489.92 |
| C-CS-S-A-ST-912 |  | FRC Stairs & Landing "ST-01" from L30 to L31 | 6d | 2015-10-11 | 2015-10-17 | C-CS-S-A-ST-902 | 88d | 0d | 16,489.92 |
| C-CS-S-A-ST-922 |  | FRC Stairs & Landing "ST-01" from L31 to L32 | 6d | 2015-10-18 | 2015-10-24 | C-CS-S-A-ST-912 | 88d | 0d | 16,489.92 |
| C-CS-S-A-ST-932 |  | FRC Stairs & Landing "ST-01" from L32 to L33 | 6d | 2015-10-25 | 2015-10-31 | C-CS-S-A-ST-922 | 88d | 0d | 16,489.92 |
| C-CS-S-A-ST-942 |  | FRC Stairs & Landing "ST-01" from L33 to L34 | 6d | 2015-11-01 | 2015-11-07 | C-CS-S-A-ST-932 | 88d | 0d | 16,489.92 |
| C-CS-S-A-ST-952 |  | FRC Stairs & Landing "ST-01" from L34 to L35 | 6d | 2015-11-08 | 2015-11-14 | C-CS-S-A-ST-942 | 88d | 0d | 16,489.92 |
| C-CS-S-A-ST-962 |  | FRC Stairs & Landing "ST-01" from L35 to L36 | 6d | 2015-11-15 | 2015-11-21 | C-CS-S-A-ST-952 | 88d | 0d | 16,489.92 |
| C-CS-S-A-ST-972 |  | FRC Stairs & Landing "ST-01" from L36 to L37 | 6d | 2015-11-22 | 2015-11-28 | C-CS-S-A-ST-962 | 88d | 0d | 16,489.92 |
| C-CS-S-A-ST-982 |  | FRC Stairs & Landing "ST-01" from L37 to L38 | 6d | 2015-11-29 | 2015-12-05 | C-CS-S-A-ST-972 | 88d | 0d | 16,489.92 |
| C-CS-S-A-ST-992 |  | FRC Stairs & Landing "ST-01" from L38 to L39 | 6d | 2015-12-06 | 2015-12-12 | C-CS-S-A-ST-982 | 88d | 0d | 16,489.92 |
| C-CS-S-A-ST-1002 |  | FRC Stairs & Landing "ST-01" from L39 to L40 | 6d | 2015-12-13 | 2015-12-20 | C-CS-S-A-ST-992 | 88d | 0d | 16,489.92 |
| C-CS-S-A-ST-1012 |  | FRC Stairs & Landing "ST-01" from L40 to L41 | 6d | 2015-12-21 | 2015-12-27 | C-CS-S-A-ST-1002 | 88d | 0d | 16,489.92 |
| C-CS-S-A-ST-1022 |  | FRC Stairs & Landing "ST-01" from L41 to L42 | 6d | 2015-12-28 | 2016-01-03 | C-CS-S-A-ST-1012 | 88d | 0d | 16,489.92 |
| C-CS-S-A-ST-1032 |  | FRC Stairs & Landing "ST-01" from L42 to L43 | 6d | 2016-01-04 | 2016-01-10 | C-CS-S-A-ST-1022 | 88d | 0d | 16,489.92 |
| C-CS-S-A-ST-1042 |  | FRC Stairs & Landing "ST-01" from L43 to L44 | 6d | 2016-01-11 | 2016-01-17 | C-CS-S-A-ST-1032 | 88d | 0d | 16,489.92 |
| C-CS-S-A-ST-1052 |  | FRC Stairs & Landing "ST-01" from L44 to L45 | 6d | 2016-01-18 | 2016-01-24 | C-CS-S-A-ST-1042 | 88d | 0d | 16,489.92 |
| C-CS-S-A-ST-1062 |  | FRC Stairs & Landing "ST-01" from L45 to L46 | 6d | 2016-01-25 | 2016-01-31 | C-CS-S-A-ST-1052 | 88d | 0d | 16,489.92 |
| C-CS-S-A-ST-1072 |  | FRC Stairs & Landing "ST-01" from L46 to L47 | 6d | 2016-02-01 | 2016-02-07 | C-CS-S-A-ST-1062 | 88d | 0d | 16,489.92 |

Notes:
- C-CS-S-L42-142: Expenses: S 317178
- C-CS-S-L42-152: Expenses: c 355389
- C-CS-S-L43-162: Expenses: S 303382
- C-CS-S-L43-172: Expenses: c 339931
- C-CS-S-L44-72: Expenses: S 317045
- C-CS-S-L45-82: Expenses: c 355240
- C-CS-S-L41-142: Expenses: S 326967
- C-CS-S-L41-152: Expenses: c 366358
- C-CS-S-L42-162: Expenses: S 285255
- C-CS-S-L42-172: Expenses: c 319621
- C-CS-S-L43-182: Expenses: S 171153
- C-CS-S-L43-192: Expenses: c 191773
- C-CS-S-L44-82: Expenses: S 190084
- C-CS-S-A-ST-602: Expenses: ST 16489.9
- C-CS-S-A-ST-612: Expenses: ST 16489.9
- C-CS-S-A-ST-622: Expenses: ST 16489.9
- C-CS-S-A-ST-632: Expenses: ST 16489.9
- C-CS-S-A-ST-642: Expenses: ST 16489.9
- C-CS-S-A-ST-652: Expenses: ST 16489.9
- C-CS-S-A-ST--662: Expenses: ST 16489.9
- C-CS-S-A-ST-672: Expenses: ST 16489.9
- C-CS-S-A-ST-682: Expenses: ST 16489.9
- C-CS-S-A-ST-692: Expenses: ST 16489.9
- C-CS-S-A-ST-702: Expenses: ST 16489.9
- C-CS-S-A-ST-712: Expenses: ST 16489.9
- C-CS-S-A-ST-722: Expenses: ST 16489.9
- C-CS-S-A-ST-732: Expenses: ST 16489.9
- C-CS-S-A-ST-742: Expenses: ST 16489.9
- C-CS-S-A-ST-752: Expenses: ST 16489.9
- C-CS-S-A-ST-762: Expenses: ST 16489.9
- C-CS-S-A-ST-772: Expenses: ST 16489.9
- C-CS-S-A-ST-782: Expenses: ST 16489.9
- C-CS-S-A-ST-792: Expenses: ST 16489.9
- C-CS-S-A-ST--802: Expenses: ST 16489.9
- C-CS-S-A-ST-812: Expenses: ST 16489.9
- C-CS-S-A-ST-822: Expenses: ST 16489.9
- C-CS-S-A-ST-832: Expenses: ST 16489.9
- C-CS-S-A-ST-842: Expenses: ST 16489.9
- C-CS-S-A-ST-852: Expenses: ST 16489.9
- C-CS-S-A-ST-862: Expenses: ST 16489.9
- C-CS-S-A-ST-872: Expenses: ST 16489.9
- C-CS-S-A-ST-882: Expenses: ST 16489.9
- C-CS-S-A-ST-892: Expenses: ST 16489.9
- C-CS-S-A-ST-902: Expenses: ST 16489.9
- C-CS-S-A-ST-912: Expenses: ST 16489.9
- C-CS-S-A-ST-922: Expenses: ST 16489.9
- C-CS-S-A-ST-932: Expenses: ST 16489.9
- C-CS-S-A-ST-942: Expenses: ST 16489.9
- C-CS-S-A-ST-952: Expenses: ST 16489.9
- C-CS-S-A-ST-962: Expenses: ST 16489.9
- C-CS-S-A-ST-972: Expenses: ST 16489.9
- C-CS-S-A-ST-982: Expenses: ST 16489.9
- C-CS-S-A-ST-992: Expenses: ST 16489.9
- C-CS-S-A-ST-1002: Expenses: ST 16489.9
- C-CS-S-A-ST-1012: Expenses: ST 16489.9
- C-CS-S-A-ST-1022: Expenses: ST 16489.9
- C-CS-S-A-ST-1032: Expenses: ST 16489.9
- C-CS-S-A-ST-1042: Expenses: ST 16489.9
- C-CS-S-A-ST-1052: Expenses: ST 16489.9
- C-CS-S-A-ST-1062: Expenses: ST 16489.9
- C-CS-S-A-ST-1072: Expenses: ST 16489.9

| ID | WBS | Activity | Duration | Start | Finish | Predecessors | Total float | Free float | Cost |
| --- | --- | --- | --- | --- | --- | --- | --- | --- | --- |
| C-CS-S-A-ST-1082 |  | FRC Stairs & Landing "ST-01" from L47 to L48 | 6d | 2016-02-08 | 2016-02-15 | C-CS-S-A-ST-1072 | 88d | 0d | 16,489.92 |
| C-CS-S-A-ST-1092 |  | FRC Stairs & Landing "ST-01" from L48 to L49 | 6d | 2016-02-16 | 2016-02-22 | C-CS-S-A-ST-1082 | 88d | 0d | 16,489.92 |
| C-CS-S-A-ST-102 |  | FRC Stairs & Landing "ST-01" from L49 to L50 | 6d | 2016-02-23 | 2016-02-29 | C-CS-S-A-ST-1092 | 88d | 0d | 16,489.92 |
| C-CS-S-A-ST-1112 |  | FRC Stairs & Landing "ST-01" from L50 to L51 | 6d | 2016-03-01 | 2016-03-07 | C-CS-S-A-ST-102 | 88d | 0d | 16,489.92 |
| C-CS-S-A-ST-1122 |  | FRC Stairs & Landing "ST-01" from L51 to Roof | 6d | 2016-03-08 | 2016-03-14 | C-CS-S-A-ST-1112 | 88d | 0d | 16,489.92 |
|  | 2 | **Stair 2** |  | 2015-03-09 | 2016-03-21 |  |  |  |  |
| C-CS-S-A-ST-1132 |  | FRC Stairs & Landing "ST-02" from GF level to MZ level | 6d | 2015-03-09 | 2015-03-15 | C-CS-S-A-ST-602, C-CS-Su-A-S2-41 | 94d | 6d | 16,489.92 |
| C-CS-S-A-ST-1142 |  | FRC Stairs & Landing "ST-02" from MZ level to L1 | 6d | 2015-03-16 | 2015-03-22 | C-CS-S-A-ST-1132 FF, C-CS-S-A-ST-612 | 88d | 0d | 16,489.92 |
| C-CS-S-A-ST-1152 |  | FRC Stairs & Landing "ST-02" from L1 to L2 | 6d | 2015-03-23 | 2015-03-29 | C-CS-S-A-ST-1142, C-CS-S-A-ST-622 | 88d | 0d | 16,489.92 |
| C-CS-S-A-ST-1162 |  | FRC Stairs & Landing "ST-02" from L2 to L3 | 6d | 2015-03-30 | 2015-04-05 | C-CS-S-A-ST-1152, C-CS-S-A-ST-632 | 88d | 0d | 16,489.92 |
| C-CS-S-A-ST-1172 |  | FRC Stairs & Landing "ST-02" from L3 to L4 | 6d | 2015-04-06 | 2015-04-12 | C-CS-S-A-ST-1162, C-CS-S-A-ST-642 | 88d | 0d | 16,489.92 |
| C-CS-S-A-ST-1182 |  | FRC Stairs & Landing "ST-02" from L4 to L5 | 6d | 2015-04-13 | 2015-04-19 | C-CS-S-A-ST-1172, C-CS-S-A-ST-652 | 88d | 0d | 16,489.92 |
| C-CS-S-A-ST-1192 |  | FRC Stairs & Landing "ST-02" from L5 to L6 | 6d | 2015-04-20 | 2015-04-26 | C-CS-S-A-ST-1182, C-CS-S-A-ST--662 | 88d | 0d | 16,489.92 |
| C-CS-S-A-ST-202 |  | FRC Stairs & Landing "ST-02" from L6 to L7 | 6d | 2015-04-27 | 2015-05-03 | C-CS-S-A-ST-1192, C-CS-S-A-ST-672 | 88d | 0d | 16,489.92 |
| C-CS-S-A-ST-212 |  | FRC Stairs & Landing "ST-02" from L7 to L8 | 6d | 2015-05-04 | 2015-05-10 | C-CS-S-A-ST-202, C-CS-S-A-ST-682 | 88d | 0d | 16,489.92 |
| C-CS-S-A-ST-222 |  | FRC Stairs & Landing "ST-02" from L8 to L9 | 6d | 2015-05-11 | 2015-05-17 | C-CS-S-A-ST-212, C-CS-S-A-ST-692 | 88d | 0d | 16,489.92 |
| C-CS-S-A-ST-232 |  | FRC Stairs & Landing "ST-02" from L9 to L10 | 6d | 2015-05-18 | 2015-05-24 | C-CS-S-A-ST-222, C-CS-S-A-ST-702 | 88d | 0d | 16,489.92 |
| C-CS-S-A-ST-242 |  | FRC Stairs & Landing "ST-02" from L10 to L11 | 6d | 2015-05-25 | 2015-05-31 | C-CS-S-A-ST-232, C-CS-S-A-ST-712 | 88d | 0d | 16,489.92 |
| C-CS-S-A-ST-252 |  | FRC Stairs & Landing "ST-02" from L11 to L12 | 6d | 2015-06-01 | 2015-06-07 | C-CS-S-A-ST-242, C-CS-S-A-ST-722 | 88d | 0d | 16,489.92 |
| C-CS-S-A-ST-262 |  | FRC Stairs & Landing "ST-02" from L12 to L13 | 6d | 2015-06-08 | 2015-06-14 | C-CS-S-A-ST-252, C-CS-S-A-ST-732 | 88d | 0d | 16,489.92 |
| C-CS-S-A-ST-272 |  | FRC Stairs & Landing "ST-02" from L13 to L14 | 6d | 2015-06-15 | 2015-06-21 | C-CS-S-A-ST-262, C-CS-S-A-ST-742 | 88d | 0d | 16,489.92 |
| C-CS-S-A-ST-82 |  | FRC Stairs & Landing "ST-02" from L14 to L15 | 6d | 2015-06-22 | 2015-06-28 | C-CS-S-A-ST-272, C-CS-S-A-ST-752 | 88d | 0d | 16,489.92 |
| C-CS-S-A-ST-292 |  | FRC Stairs & Landing "ST-02" from L15 to L16 | 6d | 2015-06-29 | 2015-07-05 | C-CS-S-A-ST-82, C-CS-S-A-ST-762 | 88d | 0d | 16,489.92 |
| C-CS-S-A-ST-302 |  | FRC Stairs & Landing "ST-02" from L16 to L17 | 6d | 2015-07-06 | 2015-07-12 | C-CS-S-A-ST-292, C-CS-S-A-ST-772 | 88d | 0d | 16,489.92 |
| C-CS-S-A-ST-312 |  | FRC Stairs & Landing "ST-02" from L17 to L18 | 6d | 2015-07-13 | 2015-07-21 | C-CS-S-A-ST-302, C-CS-S-A-ST-782 | 88d | 0d | 16,489.92 |
| C-CS-S-A-ST-322 |  | FRC Stairs & Landing "ST-02" from L18 to L19 | 6d | 2015-07-22 | 2015-07-28 | C-CS-S-A-ST-312, C-CS-S-A-ST-792 | 88d | 0d | 16,489.92 |
| C-CS-S-A-ST-32 |  | FRC Stairs & Landing "ST-02" from L19 to L20 | 6d | 2015-07-29 | 2015-08-04 | C-CS-S-A-ST-322, C-CS-S-A-ST--802 | 88d | 0d | 16,489.92 |
| C-CS-S-A-ST-342 |  | FRC Stairs & Landing "ST-02" from L20 to L21 | 6d | 2015-08-05 | 2015-08-11 | C-CS-S-A-ST-32, C-CS-S-A-ST-812 | 88d | 0d | 16,489.92 |
| C-CS-S-A-ST-52 |  | FRC Stairs & Landing "ST-02" from L21 to L22 | 6d | 2015-08-12 | 2015-08-18 | C-CS-S-A-ST-342, C-CS-S-A-ST-822 | 88d | 0d | 16,489.92 |
| C-CS-S-A-ST-62 |  | FRC Stairs & Landing "ST-02" from L22 to L23 | 6d | 2015-08-19 | 2015-08-25 | C-CS-S-A-ST-52, C-CS-S-A-ST-832 | 88d | 0d | 16,489.92 |
| C-CS-S-A-ST-72 |  | FRC Stairs & Landing "ST-02" from L23 to L24 | 6d | 2015-08-26 | 2015-09-01 | C-CS-S-A-ST-62, C-CS-S-A-ST-842 | 88d | 0d | 16,489.92 |
| C-CS-S-A-ST-382 |  | FRC Stairs & Landing "ST-02" from L24 to L25 | 6d | 2015-09-02 | 2015-09-08 | C-CS-S-A-ST-72, C-CS-S-A-ST-852 | 88d | 0d | 16,489.92 |
| C-CS-S-A-ST-392 |  | FRC Stairs & Landing "ST-02" from L25 to L26 | 6d | 2015-09-09 | 2015-09-15 | C-CS-S-A-ST-382, C-CS-S-A-ST-862 | 88d | 0d | 16,489.92 |
| C-CS-S-A-ST-402 |  | FRC Stairs & Landing "ST-02" from L26 to L27 | 6d | 2015-09-16 | 2015-09-26 | C-CS-S-A-ST-392, C-CS-S-A-ST-872 | 88d | 0d | 16,489.92 |
| C-CS-S-A-ST-412 |  | FRC Stairs & Landing "ST-02" from L27 to L28 | 6d | 2015-09-27 | 2015-10-03 | C-CS-S-A-ST-402, C-CS-S-A-ST-882 | 88d | 0d | 16,489.92 |
| C-CS-S-A-ST-422 |  | FRC Stairs & Landing "ST-02" from L28 to L29 | 6d | 2015-10-04 | 2015-10-10 | C-CS-S-A-ST-412, C-CS-S-A-ST-892 | 88d | 0d | 16,489.92 |
| C-CS-S-A-ST-432 |  | FRC Stairs & Landing "ST-02" from L29 to L30 | 6d | 2015-10-11 | 2015-10-17 | C-CS-S-A-ST-422, C-CS-S-A-ST-902 | 88d | 0d | 16,489.92 |
| C-CS-S-A-ST-442 |  | FRC Stairs & Landing "ST-02" from L30 to L31 | 6d | 2015-10-18 | 2015-10-24 | C-CS-S-A-ST-432, C-CS-S-A-ST-912 | 88d | 0d | 16,489.92 |
| C-CS-S-A-ST-452 |  | FRC Stairs & Landing "ST-02" from L31 to L32 | 6d | 2015-10-25 | 2015-10-31 | C-CS-S-A-ST-442, C-CS-S-A-ST-922 | 88d | 0d | 16,489.92 |
| C-CS-S-A-ST-462 |  | FRC Stairs & Landing "ST-02" from L32 to L33 | 6d | 2015-11-01 | 2015-11-07 | C-CS-S-A-ST-452, C-CS-S-A-ST-932 | 88d | 0d | 16,489.92 |
| C-CS-S-A-ST-472 |  | FRC Stairs & Landing "ST-02" from L33 to L34 | 6d | 2015-11-08 | 2015-11-14 | C-CS-S-A-ST-462, C-CS-S-A-ST-942 | 88d | 0d | 16,489.92 |
| C-CS-S-A-ST-482 |  | FRC Stairs & Landing "ST-02" from L34 to L35 | 6d | 2015-11-15 | 2015-11-21 | C-CS-S-A-ST-472, C-CS-S-A-ST-952 | 88d | 0d | 16,489.92 |
| C-CS-S-A-ST-492 |  | FRC Stairs & Landing "ST-02" from L35 to L36 | 6d | 2015-11-22 | 2015-11-28 | C-CS-S-A-ST-482, C-CS-S-A-ST-962 | 88d | 0d | 16,489.92 |
| C-CS-S-A-ST-502 |  | FRC Stairs & Landing "ST-02" from L36 to L37 | 6d | 2015-11-29 | 2015-12-05 | C-CS-S-A-ST-492, C-CS-S-A-ST-972 | 88d | 0d | 16,489.92 |
| C-CS-S-A-ST-512 |  | FRC Stairs & Landing "ST-02" from L37 to L38 | 6d | 2015-12-06 | 2015-12-12 | C-CS-S-A-ST-502, C-CS-S-A-ST-982 | 88d | 0d | 16,489.92 |
| C-CS-S-A-ST-522 |  | FRC Stairs & Landing "ST-02" from L38 to L39 | 6d | 2015-12-13 | 2015-12-20 | C-CS-S-A-ST-512, C-CS-S-A-ST-992 | 88d | 0d | 16,489.92 |
| C-CS-S-A-ST-532 |  | FRC Stairs & Landing "ST-02" from L39 to L40 | 6d | 2015-12-21 | 2015-12-27 | C-CS-S-A-ST-522, C-CS-S-A-ST-1002 | 88d | 0d | 16,489.92 |
| C-CS-S-A-ST-542 |  | FRC Stairs & Landing "ST-02" from L40 to L41 | 6d | 2015-12-28 | 2016-01-03 | C-CS-S-A-ST-532, C-CS-S-A-ST-1012 | 88d | 0d | 16,489.92 |
| C-CS-S-A-ST-552 |  | FRC Stairs & Landing "ST-02" from L41 to L42 | 6d | 2016-01-04 | 2016-01-10 | C-CS-S-A-ST-542, C-CS-S-A-ST-1022 | 88d | 0d | 16,489.92 |
| C-CS-S-A-ST-562 |  | FRC Stairs & Landing "ST-02" from L42 to L43 | 6d | 2016-01-11 | 2016-01-17 | C-CS-S-A-ST-552, C-CS-S-A-ST-1032 | 88d | 0d | 16,489.92 |
| C-CS-S-A-ST-572 |  | FRC Stairs & Landing "ST-02" from L43 to L44 | 6d | 2016-01-18 | 2016-01-24 | C-CS-S-A-ST-562, C-CS-S-A-ST-1042 | 88d | 0d | 16,489.92 |
| C-CS-S-A-ST-1582 |  | FRC Stairs & Landing "ST-02" from L44 to L45 | 6d | 2016-01-25 | 2016-01-31 | C-CS-S-A-ST-572, C-CS-S-A-ST-1052 | 88d | 0d | 16,489.92 |
| C-CS-S-A-ST-1592 |  | FRC Stairs & Landing "ST-02" from L45 to L46 | 6d | 2016-02-01 | 2016-02-07 | C-CS-S-A-ST-1582, C-CS-S-A-ST-1062 | 88d | 0d | 16,489.92 |
| C-CS-S-A-ST-1602 |  | FRC Stairs & Landing "ST-02" from L46 to L47 | 6d | 2016-02-08 | 2016-02-15 | C-CS-S-A-ST-1592, C-CS-S-A-ST-1072 | 88d | 0d | 16,489.92 |
| C-CS-S-A-ST-1612 |  | FRC Stairs & Landing "ST-02" from L47 to L48 | 6d | 2016-02-16 | 2016-02-22 | C-CS-S-A-ST-1602, C-CS-S-A-ST-1082 | 88d | 0d | 16,489.92 |
| C-CS-S-A-ST-1622 |  | FRC Stairs & Landing "ST-02" from L48 to L49 | 6d | 2016-02-23 | 2016-02-29 | C-CS-S-A-ST-1612, C-CS-S-A-ST-1092 | 88d | 0d | 16,489.92 |
| C-CS-S-A-ST-1632 |  | FRC Stairs & Landing "ST-02" from L49 to L40 | 6d | 2016-03-01 | 2016-03-07 | C-CS-S-A-ST-1622, C-CS-S-A-ST-102 | 88d | 0d | 16,489.92 |
| C-CS-S-A-ST-1642 |  | FRC Stairs & Landing "ST-02" from L50 to L51 | 6d | 2016-03-08 | 2016-03-14 | C-CS-S-A-ST-1632 | 88d | 0d | 16,489.92 |
| C-CS-S-A-ST-1652 |  | FRC Stairs & Landing "ST-02" from L51 to Roof | 6d | 2016-03-15 | 2016-03-21 | C-CS-S-A-ST-1642, C-CS-S-A-ST-1122 | 88d |  | 16,489.92 |

Notes:
- C-CS-S-A-ST-1082: Expenses: ST 16489.9
- C-CS-S-A-ST-1092: Expenses: ST 16489.9
- C-CS-S-A-ST-102: Expenses: ST 16489.9
- C-CS-S-A-ST-1112: Expenses: ST 16489.9
- C-CS-S-A-ST-1122: Expenses: ST 16489.9
- C-CS-S-A-ST-1132: Expenses: ST 16489.9
- C-CS-S-A-ST-1142: Expenses: ST 16489.9
- C-CS-S-A-ST-1152: Expenses: ST 16489.9
- C-CS-S-A-ST-1162: Expenses: ST 16489.9
- C-CS-S-A-ST-1172: Expenses: ST 16489.9
- C-CS-S-A-ST-1182: Expenses: ST 16489.9
- C-CS-S-A-ST-1192: Expenses: ST 16489.9
- C-CS-S-A-ST-202: Expenses: ST 16489.9
- C-CS-S-A-ST-212: Expenses: ST 16489.9
- C-CS-S-A-ST-222: Expenses: ST 16489.9
- C-CS-S-A-ST-232: Expenses: ST 16489.9
- C-CS-S-A-ST-242: Expenses: ST 16489.9
- C-CS-S-A-ST-252: Expenses: ST 16489.9
- C-CS-S-A-ST-262: Expenses: ST 16489.9
- C-CS-S-A-ST-272: Expenses: ST 16489.9
- C-CS-S-A-ST-82: Expenses: ST 16489.9
- C-CS-S-A-ST-292: Expenses: ST 16489.9
- C-CS-S-A-ST-302: Expenses: ST 16489.9
- C-CS-S-A-ST-312: Expenses: ST 16489.9
- C-CS-S-A-ST-322: Expenses: ST 16489.9
- C-CS-S-A-ST-32: Expenses: ST 16489.9
- C-CS-S-A-ST-342: Expenses: ST 16489.9
- C-CS-S-A-ST-52: Expenses: ST 16489.9
- C-CS-S-A-ST-62: Expenses: ST 16489.9
- C-CS-S-A-ST-72: Expenses: ST 16489.9
- C-CS-S-A-ST-382: Expenses: ST 16489.9
- C-CS-S-A-ST-392: Expenses: ST 16489.9
- C-CS-S-A-ST-402: Expenses: ST 16489.9
- C-CS-S-A-ST-412: Expenses: ST 16489.9
- C-CS-S-A-ST-422: Expenses: ST 16489.9
- C-CS-S-A-ST-432: Expenses: ST 16489.9
- C-CS-S-A-ST-442: Expenses: ST 16489.9
- C-CS-S-A-ST-452: Expenses: ST 16489.9
- C-CS-S-A-ST-462: Expenses: ST 16489.9
- C-CS-S-A-ST-472: Expenses: ST 16489.9
- C-CS-S-A-ST-482: Expenses: ST 16489.9
- C-CS-S-A-ST-492: Expenses: ST 16489.9
- C-CS-S-A-ST-502: Expenses: ST 16489.9
- C-CS-S-A-ST-512: Expenses: ST 16489.9
- C-CS-S-A-ST-522: Expenses: ST 16489.9
- C-CS-S-A-ST-532: Expenses: ST 16489.9
- C-CS-S-A-ST-542: Expenses: ST 16489.9
- C-CS-S-A-ST-552: Expenses: ST 16489.9
- C-CS-S-A-ST-562: Expenses: ST 16489.9
- C-CS-S-A-ST-572: Expenses: ST 16489.9
- C-CS-S-A-ST-1582: Expenses: ST 16489.9
- C-CS-S-A-ST-1592: Expenses: ST 16489.9
- C-CS-S-A-ST-1602: Expenses: ST 16489.9
- C-CS-S-A-ST-1612: Expenses: ST 16489.9
- C-CS-S-A-ST-1622: Expenses: ST 16489.9
- C-CS-S-A-ST-1632: Expenses: ST 16489.9
- C-CS-S-A-ST-1642: Expenses: ST 16489.9
- C-CS-S-A-ST-1652: Expenses: ST 16489.9

| ID | WBS | Activity | Duration | Start | Finish | Predecessors | Total float | Free float | Cost |
| --- | --- | --- | --- | --- | --- | --- | --- | --- | --- |
|  | 3 | **Stair 3** |  | 2015-05-11 | 2015-06-07 |  |  |  |  |
| C-CS-S-A-ST-1662 |  | FRC Stairs & Landing "ST-03" from GF level to MZ level | 6d | 2015-05-11 | 2015-05-17 | C-CS-Su-A-S3-11, C-CS-S-A-ST-212 | 289d | 0d | 16,489.92 |
| C-CS-S-A-ST-1672 |  | FRC Stairs & Landing "ST-03" from MZ level to L1 | 6d | 2015-05-18 | 2015-05-24 | C-CS-S-A-ST-1662 | 289d | 0d | 16,489.92 |
| C-CS-S-A-ST-1682 |  | FRC Stairs & Landing "ST-03" from L1 to L2 | 6d | 2015-05-25 | 2015-05-31 | C-CS-S-A-ST-1672 | 289d | 0d | 16,489.92 |
| C-CS-S-A-ST-1692 |  | FRC Stairs & Landing "ST-03" from L2 to L3 | 6d | 2015-06-01 | 2015-06-07 | C-CS-S-A-ST-1682 | 289d | 0d | 16,489.92 |
|  | 4 | **Stair 9** |  | 2015-06-08 | 2015-07-05 |  |  |  |  |
| C-CS-S-A-ST-1702 |  | FRC Stairs & Landing "ST-09" from GF level to MZ level | 6d | 2015-06-08 | 2015-06-14 | C-CS-MZ-31, C-CS-S-A-ST-1692 | 289d | 0d | 16,489.92 |
| C-CS-S-A-ST-1712 |  | FRC Stairs & Landing "ST-09" from MZ level to L1 | 6d | 2015-06-15 | 2015-06-21 | C-CS-S-A-ST-1702 | 289d | 0d | 16,489.92 |
| C-CS-S-A-ST-1722 |  | FRC Stairs & Landing "ST-09" from L1 to L2 | 6d | 2015-06-22 | 2015-06-28 | C-CS-S-A-ST-1712 | 289d | 0d | 16,489.92 |
| C-CS-S-A-ST-1732 |  | FRC Stairs & Landing "ST-09" from L2 to L3 | 6d | 2015-06-29 | 2015-07-05 | C-CS-S-A-ST-1722 | 289d | 0d | 16,489.92 |
|  | 5 | **Stair 10** |  | 2015-07-06 | 2015-07-25 |  |  |  |  |
| C-CS-S-A-ST-1742 |  | FRC Stairs & Landing "ST-10" from GF level to level 1 | 15d | 2015-07-06 | 2015-07-25 | C-CS-S-A-ST-1732 | 289d |  | 32,979.83 |
|  | 3 | **Tanks** |  | 2015-07-01 | 2016-03-03 |  |  |  |  |
|  | 1 | **Water Tanks at 17th Floor** |  | 2015-07-01 | 2015-07-04 |  |  |  |  |
| C-CS-S-T-421 |  | FRC Walls at 17th floor | 3d | 2015-07-01 | 2015-07-04 | C-CS-S-L17-52 SS, C-CS-S-L17-42 | 0d |  | 118,254.28 |
| C-CS-S-T-431 |  | Installarion of MEP Sleeves at 17th floor | 2d | 2015-07-02 | 2015-07-04 | C-CS-S-T-421 SS, C-CS-S-T-421 FF | 0d |  |  |
|  | 2 | **Swimming Pool Tank at 32nd Floor** |  | 2015-10-29 | 2015-11-01 |  |  |  |  |
| C-CS-S-T-451 |  | FRC Walls at 32nd floor | 3d | 2015-10-29 | 2015-11-01 | C-CS-S-L32-82, C-CS-S-L32-92 SS | 0d |  | 118,254.28 |
| C-CS-S-T-461 |  | Installarion of MEP Sleeves at 32nd floor | 2d | 2015-10-31 | 2015-11-01 | C-CS-S-T-451 SS, C-CS-S-T-451 FF | 0d |  |  |
|  | 3 | **Water Tanks at 49tth Floor** |  | 2016-03-01 | 2016-03-03 |  |  |  |  |
| C-CS-S-T-481 |  | FRC Walls at 49th floor | 3d | 2016-03-01 | 2016-03-03 | C-CS-S-L44-72, C-CS-S-L45-82 SS | 0d |  | 118,254.28 |
| C-CS-S-T-491 |  | Installarion of MEP Sleeves at 49th floor | 2d | 2016-03-02 | 2016-03-03 | C-CS-S-T-481 SS, C-CS-S-T-481 FF | 0d |  |  |
|  | 4 | **FRC Slab on structural steel decking** |  | 2015-08-03 | 2015-08-25 |  |  |  |  |
| C-S-SD-001 |  | FRC Slab on structural steel decking at level 1 | 5d | 2015-08-03 | 2015-08-08 | C-SS-FD-284 | 1d | 0d | 18,215.02 |
| C-S-SD-1 |  | FRC Slab on structural steel decking at level 1 Mezzanine | 5d | 2015-08-09 | 2015-08-13 | C-S-SD-001 | 1d | 0d | 18,215.02 |
| C-S-SD-11 |  | FRC Slab on structural steel decking at level 2 | 5d | 2015-08-15 | 2015-08-19 | C-S-SD-1 | 1d | 0d | 18,215.02 |
| C-S-SD-21 |  | FRC Slab on structural steel decking at level 3 | 5d | 2015-08-20 | 2015-08-25 | C-S-SD-11 | 1d | 0d | 18,215.02 |

Notes:
- C-CS-S-A-ST-1662: Expenses: ST 16489.9
- C-CS-S-A-ST-1672: Expenses: ST 16489.9
- C-CS-S-A-ST-1682: Expenses: ST 16489.9
- C-CS-S-A-ST-1692: Expenses: ST 16489.9
- C-CS-S-A-ST-1702: Expenses: ST 16489.9
- C-CS-S-A-ST-1712: Expenses: ST 16489.9
- C-CS-S-A-ST-1722: Expenses: ST 16489.9
- C-CS-S-A-ST-1732: Expenses: ST 16489.9
- C-CS-S-A-ST-1742: Expenses: ST 32979.8
- C-CS-S-T-421: Expenses: T 118254
- C-CS-S-T-451: Expenses: T 118254
- C-CS-S-T-481: Expenses: T 118254
- C-S-SD-001: Expenses: cd 18215
- C-S-SD-1: Expenses: cd 18215
- C-S-SD-11: Expenses: cd 18215
- C-S-SD-21: Expenses: CD 18215

| ID | WBS | Activity | Duration | Start | Finish | Predecessors | Total float | Free float | Cost |
| --- | --- | --- | --- | --- | --- | --- | --- | --- | --- |
|  | 5 | **Pedestrian Ramp** |  | 2015-02-25 | 2015-03-02 |  |  |  |  |
| C-S-PR-001 |  | FRC Pedstrian ramp at ground level | 5d | 2015-02-25 | 2015-03-02 | C-CS-GF-21 | 130d | 9d | 10,164.56 |
|  | 3 | **Floor Clearance for MEP & Architectural** |  | 2015-01-03 | 2016-04-20 |  |  |  |  |
|  | 2 | **Area A** |  | 2015-01-03 | 2016-04-20 |  |  |  |  |
| C-CS-B3-01 |  | Removal of scaffolding & clearance for MEP & Architectural works at Basement 3 | 18d | 2015-01-03 | 2015-01-22 | C-CS-Su-A-B2-01 | 104d | 0d |  |
| C-CS-B2-1 |  | Removal of scaffolding & clearance for MEP & Architectural works at Basement 2 | 18d | 2015-01-11 | 2015-01-31 | C-CS-Su-A-B1-01 | 135d | 0d |  |
| C-CS-B1-11 |  | Removal of scaffolding & clearance for MEP & Architectural works at Basement 1 | 18d | 2015-01-21 | 2015-02-11 | C-CS-Su-A-GF-01 | 132d | 0d |  |
| C-CS-GF-21 |  | Removal of scaffolding & clearance for MEP & Architectural works at Ground FLoor | 18d | 2015-02-03 | 2015-02-24 | C-CS-S-MZ-01 | 41d | 0d |  |
| C-CS-MZ-31 |  | Removal of scaffolding & clearance for MEP & Architectural works at Ground Mezzanine FLoor | 18d | 2015-02-12 | 2015-03-04 | C-CS-S-L1-01 | 75d | 0d |  |
| C-CS-L1-41 |  | Removal of scaffolding & clearance for MEP & Architectural works at Level 1 | 18d | 2015-02-21 | 2015-03-12 | C-CS-S-L1M-2 | 88d | 0d |  |
| C-CS-L1-51 |  | Removal of scaffolding & clearance for MEP & Architectural works at Level 1 Mezzanine | 18d | 2015-03-01 | 2015-03-21 | C-CS-S-L2-2, C-CS-Su-D-001 FF | 86d | 0d |  |
| C-CS-L2-51 |  | Removal of scaffolding & clearance for MEP & Architectural works at Level 2 | 18d | 2015-03-09 | 2015-03-29 | C-CS-S-L3-22 | 79d | 0d |  |
| C-CS-L3-61 |  | Removal of scaffolding & clearance for MEP & Architectural works at Level 3 | 18d | 2015-03-17 | 2015-04-06 | C-CS-S-L4-42 | 72d | 0d |  |
| C-CS-L4-71 |  | Removal of scaffolding & clearance for MEP & Architectural works at Level 4 | 18d | 2015-03-25 | 2015-04-14 | C-CS-S-L5-62 | 79d | 0d |  |
| C-CS-L5-81 |  | Removal of scaffolding & clearance for MEP & Architectural works at Level 5 | 18d | 2015-04-02 | 2015-04-22 | C-CS-S-L6-2 | 72d | 0d |  |
| C-CS-L6-91 |  | Removal of scaffolding & clearance for MEP & Architectural works at Level 6 | 18d | 2015-04-11 | 2015-04-30 | C-CS-S-L7-2 | 65d | 0d |  |
| C-CS-L7-101 |  | Removal of scaffolding & clearance for MEP & Architectural works at Level 7 | 18d | 2015-04-19 | 2015-05-09 | C-CS-S-L8-22 | 58d | 0d |  |
| C-CS-L8-111 |  | Removal of scaffolding & clearance for MEP & Architectural works at Level 8 | 18d | 2015-04-27 | 2015-05-17 | C-CS-S-L9-42 | 51d | 0d |  |
| C-CS-L9-121 |  | Removal of scaffolding & clearance for MEP & Architectural works at Level 9 | 18d | 2015-05-05 | 2015-05-25 | C-CS-S-L10-62 | 44d | 0d |  |
| C-CS-L10-131 |  | Removal of scaffolding & clearance for MEP & Architectural works at Level 10 | 18d | 2015-05-13 | 2015-06-02 | C-CS-S-L11-82 | 51d | 0d |  |
| C-CS-L11-141 |  | Removal of scaffolding & clearance for MEP & Architectural works at Level 11 | 18d | 2015-05-21 | 2015-06-10 | C-CS-S-L12-22 | 44d | 0d |  |
| C-CS-L12-151 |  | Removal of scaffolding & clearance for MEP & Architectural works at Level 12 | 18d | 2015-05-30 | 2015-06-18 | C-CS-S-L13-62 | 37d | 0d |  |
| C-CS-L13-161 |  | Removal of scaffolding & clearance for MEP & Architectural works at Level 13 | 18d | 2015-06-07 | 2015-06-27 | C-CS-S-L14-82 | 44d | 7d |  |
| C-CS-L14-171 |  | Removal of scaffolding & clearance for MEP & Architectural works at Level 14 | 18d | 2015-06-15 | 2015-07-05 | C-CS-S-L15-102 | 37d | 0d |  |
| C-CS-L15-181 |  | Removal of scaffolding & clearance for MEP & Architectural works at Level 15 | 18d | 2015-06-23 | 2015-07-13 | C-CS-S-L16-22 | 44d | 7d |  |
| C-CS-L16-191 |  | Removal of scaffolding & clearance for MEP & Architectural works at Level 16 | 18d | 2015-07-01 | 2015-07-23 | C-CS-S-L17-42 | 37d | 0d |  |
| C-CS-L17-201 |  | Removal of scaffolding & clearance for MEP & Architectural works at Level 17 | 18d | 2015-07-12 | 2015-08-03 | C-CS-S-L18-62 | 42d | 0d |  |
| C-CS-L18-211 |  | Removal of scaffolding & clearance for MEP & Architectural works at Level 18 | 18d | 2015-07-22 | 2015-08-11 | C-CS-S-L19-82 | 35d | 0d |  |
| C-CS-L19-221 |  | Removal of scaffolding & clearance for MEP & Architectural works at Level 19 | 18d | 2015-07-30 | 2015-08-19 | C-CS-S-L20-102 | 28d | 0d |  |
| C-CS-L20-231 |  | Removal of scaffolding & clearance for MEP & Architectural works at Level 20 | 18d | 2015-08-08 | 2015-08-27 | C-CS-S-L21-122 | 21d | 0d |  |
| C-CS-L21-241 |  | Removal of scaffolding & clearance for MEP & Architectural works at Level 21 | 18d | 2015-08-16 | 2015-09-05 | C-CS-S-L22-42 | 28d | 7d |  |
| C-CS-L22-251 |  | Removal of scaffolding & clearance for MEP & Architectural works at Level 22 | 18d | 2015-08-23 | 2015-09-12 | C-CS-S-L23-2 | 22d | 1d |  |
| C-CS-L23-261 |  | Removal of scaffolding & clearance for MEP & Architectural works at Level 23 | 18d | 2015-08-30 | 2015-09-19 | C-CS-S-L24-22 | 30d | 0d |  |
| C-CS-L24-271 |  | Removal of scaffolding & clearance for MEP & Architectural works at Level 24 | 18d | 2015-09-06 | 2015-09-29 | C-CS-S-L25-42 | 24d | 3d |  |
| C-CS-L25-270 |  | Removal of scaffolding & clearance for MEP & Architectural works at Level 25 | 18d | 2015-09-13 | 2015-10-06 | C-CS-S-L26-62 | 18d | 0d |  |
| C-CS-L26-51 |  | Removal of scaffolding & clearance for MEP & Architectural works at Level 26 | 18d | 2015-09-23 | 2015-10-13 | C-CS-S-L27-82 | 12d | 0d |  |
| C-CS-L27-61 |  | Removal of scaffolding & clearance for MEP & Architectural works at Level 27 | 18d | 2015-09-30 | 2015-10-20 | C-CS-S-L28-22 | 6d | 0d |  |
| C-CS-L28-71 |  | Removal of scaffolding & clearance for MEP & Architectural works at Level 28 | 18d | 2015-10-07 | 2015-10-27 | C-CS-S-L29-22 | 46d | 8d |  |
| C-CS-L29-81 |  | Removal of scaffolding & clearance for MEP & Architectural works at Level 29 | 18d | 2015-10-14 | 2015-11-03 | C-CS-S-L30-42 | 40d | 2d |  |
| C-CS-L30-91 |  | Removal of scaffolding & clearance for MEP & Architectural works at Level 30 | 18d | 2015-10-21 | 2015-11-10 | C-CS-S-L31-62 | 2d | 0d |  |
| C-CS-L31-101 |  | Removal of scaffolding & clearance for MEP & Architectural works at Level 31 | 18d | 2015-10-29 | 2015-11-18 | C-CS-S-L32-82 | 41d | 7d |  |
| C-CS-L32-111 |  | Removal of scaffolding & clearance for MEP & Architectural works at Level 32 | 18d | 2015-11-08 | 2015-11-28 | C-CS-S-L33-102 | 33d | 0d |  |
| C-CS-L33-121 |  | Removal of scaffolding & clearance for MEP & Architectural works at Level 33 | 18d | 2015-11-15 | 2015-12-05 | C-CS-S-L34-42 | 27d | 0d |  |
| C-CS-L34-131 |  | Removal of scaffolding & clearance for MEP & Architectural works at Level 34 | 18d | 2015-11-22 | 2015-12-12 | C-CS-S-L35-82 | 21d | 0d |  |
| C-CS-L35-141 |  | Removal of scaffolding & clearance for MEP & Architectural works at Level 35 | 18d | 2015-11-29 | 2015-12-20 | C-CS-S-L36-102 | 29d | 1d |  |
| C-CS-L36-151 |  | Removal of scaffolding & clearance for MEP & Architectural works at Level 36 | 18d | 2015-12-06 | 2015-12-27 | C-CS-S-L37-122 | 23d | 0d |  |
| C-CS-L37-161 |  | Removal of scaffolding & clearance for MEP & Architectural works at Level 37 | 18d | 2015-12-13 | 2016-01-03 | C-CS-S-L38-42 | 17d | 0d |  |
| C-CS-L38-171 |  | Removal of scaffolding & clearance for MEP & Architectural works at Level 38 | 18d | 2015-12-21 | 2016-01-10 | C-CS-S-L39-62 | 11d | 0d |  |
| C-CS-L39-181 |  | Removal of scaffolding & clearance for MEP & Architectural works at Level 39 | 18d | 2015-12-28 | 2016-01-17 | C-CS-S-L40-82 | 19d | 8d |  |
| C-CS-L40-191 |  | Removal of scaffolding & clearance for MEP & Architectural works at Level 40 | 18d | 2016-01-04 | 2016-01-24 | C-CS-S-L41-102 | 13d | 2d |  |
| C-CS-L41-201 |  | Removal of scaffolding & clearance for MEP & Architectural works at Level 41 | 18d | 2016-01-11 | 2016-01-31 | C-CS-S-L42-122 | 7d | 0d |  |
| C-CS-L42-211 |  | Removal of scaffolding & clearance for MEP & Architectural works at Level 42 | 18d | 2016-01-18 | 2016-02-07 | C-CS-S-L43-142 | 15d | 8d |  |
| C-CS-L43-221 |  | Removal of scaffolding & clearance for MEP & Architectural works at Level 43 | 18d | 2016-01-25 | 2016-02-15 | C-CS-S-L44-62 | 9d | 2d |  |
| C-CS-L44-231 |  | Removal of scaffolding & clearance for MEP & Architectural works at Level 44 | 18d | 2016-02-01 | 2016-02-22 | C-CS-S-L40-102 | 3d | 0d |  |
| C-CS-L45-281 |  | Removal of scaffolding & clearance for MEP & Architectural works at Level 45 | 18d | 2016-02-08 | 2016-02-29 | C-CS-S-L41-122 | 11d | 8d |  |
| C-CS-L46-291 |  | Removal of scaffolding & clearance for MEP & Architectural works at Level 46 | 18d | 2016-02-16 | 2016-03-07 | C-CS-S-L42-142 | 18d | 2d |  |
| C-CS-L47-301 |  | Removal of scaffolding & clearance for MEP & Architectural works at Level 47 | 18d | 2016-02-23 | 2016-03-14 | C-CS-S-L43-162 | 12d | 0d |  |
| C-CS-L48-311 |  | Removal of scaffolding & clearance for MEP & Architectural works at Level 48 | 18d | 2016-03-01 | 2016-03-21 | C-CS-S-L44-72 | 10d | 0d |  |
| C-CS-L49-321 |  | Removal of scaffolding & clearance for MEP & Architectural works at Level 49 | 18d | 2016-03-09 | 2016-03-29 | C-CS-S-L41-142 | 3d | 0d |  |
| C-CS-L50-331 |  | Removal of scaffolding & clearance for MEP & Architectural works at Level 50 | 18d | 2016-03-16 | 2016-04-05 | C-CS-S-L42-162 | 5d | 0d |  |
| C-CS-L51-341 |  | Removal of scaffolding & clearance for MEP & Architectural works at Level 51 | 18d | 2016-03-16 | 2016-04-05 | C-CS-S-L42-162 | 15d | 0d |  |
| C-CS-L51-361 |  | Removal of scaffolding & clearance for MEP & Architectural works at Lower Roof Level | 18d | 2016-03-23 | 2016-04-12 | C-CS-S-L43-182 | 7d | 0d |  |
| C-CS-L51-371 |  | Removal of scaffolding & clearance for MEP & Architectural works at Top Roof Level | 18d | 2016-03-31 | 2016-04-20 | C-CS-S-L44-82 | 0d |  |  |

Notes:
- C-S-PR-001: Expenses: P 10164.6

| ID | WBS | Activity | Duration | Start | Finish | Predecessors | Total float | Free float | Cost |
| --- | --- | --- | --- | --- | --- | --- | --- | --- | --- |
|  | 1 | **Area B** |  | 2015-05-04 | 2015-08-26 |  |  |  |  |
| C-CS-B3-1 |  | Removal of scaffolding & clearance for MEP & Architectural works at Basement 3 | 18d | 2015-05-04 | 2015-05-24 | C-CS-Su-B-B2-01 | 148d | 0d |  |
| C-CS-B2-11 |  | Removal of scaffolding & clearance for MEP & Architectural works at Basement 2 | 18d | 2015-06-15 | 2015-07-05 | C-CS-Su-B-B1-01 | 87d | 0d |  |
| C-CS-B1-21 |  | Removal of scaffolding & clearance for MEP & Architectural works at Basement 1 | 18d | 2015-08-06 | 2015-08-26 | C-CS-Su-R-001 | 133d | 0d |  |
|  | 4 | **Structural Steel** |  | 2015-01-15 | 2016-05-14 |  |  |  |  |
|  | 6 | **Floor Decking from Ground floor to third floor - West Elevation** |  | 2015-04-13 | 2015-08-02 |  |  |  |  |
| C-SS-FD-214 |  | Installation of Structural Steel Columns & implementation of fire proofing from Ground to level 1 | 10d | 2015-04-13 | 2015-04-23 | C-CS-Su-A-GF-01, P-CS-C-563, PQ-CS-C-312, C-CS-GF-21 | 1d | 0d | 433,760.17 |
| C-SS-FD-224 |  | Installationn of Level 1- Horizontal Structural steel Decking & implementation of fire proofing | 13d | 2015-04-25 | 2015-05-09 | C-SS-FD-214 | 1d | 0d | 433,760.17 |
| C-SS-FD-234 |  | Installation of Structural Steel Columns & implementation of fire proofing from Level 1 Level 1 Mezz. | 10d | 2015-05-10 | 2015-05-20 | C-SS-FD-224 | 1d | 0d | 433,760.17 |
| C-SS-FD-244 |  | Installation of Level 1 Mezz. - Horizontal Structural steel Decking & implementation of fire proofing | 13d | 2015-05-21 | 2015-06-04 | C-SS-FD-234 | 1d | 0d | 433,760.17 |
| C-SS-FD-254 |  | Installation of Structural Steel Columns from Level 1 Mezz. to Level 2 & implementation of fire proofing | 10d | 2015-06-06 | 2015-06-16 | C-SS-FD-244 | 1d | 0d | 433,760.17 |
| C-SS-FD-264 |  | Installation of Level 2 - Horizontal Structural steel Decking & implementation of fire proofing | 14d | 2015-06-17 | 2015-07-02 | C-SS-FD-254 | 1d | 0d | 433,760.17 |
| C-SS-FD-274 |  | Installation of Structural Steel Columns from Level 2 to Level 3 & implementation of fire proofing | 10d | 2015-07-04 | 2015-07-14 | C-SS-FD-264 | 1d | 0d | 433,760.17 |
| C-SS-FD-284 |  | Installation of Level 3 - Horizontal Structural steel Decking & implementation of fire proofing | 14d | 2015-07-18 | 2015-08-02 | C-SS-FD-274 | 1d | 0d | 433,760.17 |
|  | 10 | **Cladding Support (Fins 1 & 2)** |  | 2015-06-03 | 2016-04-28 |  |  |  |  |
|  | 1 | **Fins 1- East Elevation** |  | 2015-06-08 | 2016-04-28 |  |  |  |  |
| C-SS-CS-194 |  | Installation of Cladding Suppot elements & implementation of fire proofing from L4 to L10 - East elevation | 20d | 2015-06-08 | 2015-06-30 | C-SS-MC-184, C-CS-L10-131 | 83d | 14d | 210,282.59 |
| C-SS-CS-534 |  | Installation of Cladding Suppot elements & implementation of fire proofing from L11 to L16 - East elevation | 20d | 2015-07-25 | 2015-08-16 | C-SS-CS-194, C-CS-L16-191 | 95d | 26d | 210,282.59 |
| C-SS-CS-544 |  | Installation of Cladding Suppot elements & implementation of fire proofing from L17 to L23- East elevation | 20d | 2015-09-23 | 2015-10-15 | C-SS-CS-534, C-CS-L23-261 | 71d | 2d | 210,282.59 |
| C-SS-CS-554 |  | Installation of Cladding Suppot elements & implementation of fire proofing from L24 to 30 - East elevation | 20d | 2015-11-11 | 2015-12-03 | C-SS-CS-544, C-CS-L30-91 | 54d | 0d | 210,282.59 |
| C-SS-CS-564 |  | Installation of Cladding Suppot elements & implementation of fire proofing from L31 to L37 - East elevation | 20d | 2015-12-28 | 2016-01-19 | C-SS-CS-554, C-CS-L36-151 | 40d | 0d | 210,282.59 |
| C-SS-CS-574 |  | Installation of Cladding Suppot elements & implementation of fire proofing from L38 to L44 - East elevation | 20d | 2016-02-23 | 2016-03-16 | C-SS-CS-564, C-CS-L44-231 | 17d | 0d | 210,282.59 |
| C-SS-CS-584 |  | Installation of Cladding Suppot elements & implementation of fire proofing from L45 to L50- East elevation | 20d | 2016-04-06 | 2016-04-28 | C-SS-CS-574, C-CS-L50-331 | 5d | 0d | 210,282.59 |
|  | 2 | **Fins 2- West Elevation** |  | 2015-06-03 | 2016-04-28 |  |  |  |  |
| C-SS-CS-W-204 |  | Installation of Cladding Suppot elements & implementation of fire proofing from L4 to 10 - West elevation | 20d | 2015-06-03 | 2015-06-25 | C-CS-L10-131 | 87d | 22d | 210,282.59 |
| C-SS-CS-W-474 |  | Installation of Cladding Suppot elements & implementation of fire proofing from L11 to L16 - West elevation | 20d | 2015-07-25 | 2015-08-16 | C-SS-CS-W-204, C-CS-L16-191 | 95d | 29d | 210,282.59 |
| C-SS-CS-W-484 |  | Installation of Cladding Suppot elements & implementation of fire proofing from L17 to L23- West elevation | 20d | 2015-09-23 | 2015-10-15 | C-SS-CS-W-474, C-CS-L23-261 | 71d | 22d | 210,282.59 |
| C-SS-CS-W-494 |  | Installation of Cladding Suppot elements & implementation of fire proofing from L24 to 30 - West elevation | 20d | 2015-11-11 | 2015-12-03 | C-SS-CS-W-484, C-CS-L30-91 | 54d | 25d | 210,282.59 |
| C-SS-CS-W-504 |  | Installation of Cladding Suppot elements & implementation of fire proofing from L31 to L37 - West elevation | 20d | 2016-01-04 | 2016-01-26 | C-SS-CS-W-494, C-CS-L37-161 | 34d | 6d | 210,282.59 |
| C-SS-CS-W-514 |  | Installation of Cladding Suppot elements & implementation of fire proofing from L38 to L44 - West elevation | 20d | 2016-02-23 | 2016-03-16 | C-SS-CS-W-504, C-CS-L44-231 | 17d | 0d | 210,282.59 |
| C-SS-CS-W-524 |  | Installation of Cladding Suppot elements & implementation of fire proofing from L45 to L50- West elevation | 20d | 2016-04-06 | 2016-04-28 | C-SS-CS-W-514, C-CS-L50-331 | 5d | 0d | 210,282.59 |

Notes:
- C-SS-FD-214: Expenses: FD 349976; FP 83784.4
- C-SS-FD-224: Expenses: FD 349976; FP 83784.4
- C-SS-FD-234: Expenses: FD 349976; FP 83784.4
- C-SS-FD-244: Expenses: FD 349976; FP 83784.4
- C-SS-FD-254: Expenses: FD 349976; FP 83784.4
- C-SS-FD-264: Expenses: FD 349976; FP 83784.4
- C-SS-FD-274: Expenses: FD 349976; FP 83784.4
- C-SS-FD-284: Expenses: FD 349976; FP 83784.4
- C-SS-CS-194: Expenses: F 126498; FP 83784.4
- C-SS-CS-534: Expenses: F 126498; FP 83784.4
- C-SS-CS-544: Expenses: F 126498; FP 83784.4
- C-SS-CS-554: Expenses: F 126498; FP 83784.4
- C-SS-CS-564: Expenses: F 126498; FP 83784.4
- C-SS-CS-574: Expenses: F 126498; FP 83784.4
- C-SS-CS-584: Expenses: F 126498; FP 83784.4
- C-SS-CS-W-204: Expenses: F 126498; FP 83784.4
- C-SS-CS-W-474: Expenses: F 126498; FP 83784.4
- C-SS-CS-W-484: Expenses: F 126498; FP 83784.4
- C-SS-CS-W-494: Expenses: F 126498; FP 83784.4
- C-SS-CS-W-504: Expenses: F 126498; FP 83784.4
- C-SS-CS-W-514: Expenses: F 126498; FP 83784.4
- C-SS-CS-W-524: Expenses: F 126498; FP 83784.4

| ID | WBS | Activity | Duration | Start | Finish | Predecessors | Total float | Free float | Cost | AREA |
| --- | --- | --- | --- | --- | --- | --- | --- | --- | --- | --- |
|  | 2 | **Main Canopy - Facade Canopy - North Elevation** |  | 2015-03-18 | 2015-06-07 |  |  |  |  |  |
| C-SS-MC-164 |  | Installation of Embeded plates within concrete columns at walls L4 to L5 | 2d | 2015-03-18 | 2015-03-19 | PQ-CS-C-232, C-CS-S-L4-52 SS, C-CS-S-L4-52 FF | 101d | 18d | 227,309.74 | S |
| C-SS-MC-174 |  | Installation of canopy structural steel main elements & implementation of fire proofing at L4 - North Elevation | 25d | 2015-04-11 | 2015-05-09 | C-SS-MC-164, P-CS-C-403, C-CS-L4-71 SS+14d | 83d | 0d | 516,943.87 |  |
| C-SS-MC-184 |  | Installation of canopy structural steel Secondary elements & implementation of fire proofing at L4 - North Elevation | 25d | 2015-05-10 | 2015-06-07 | C-SS-MC-174 | 83d | 0d | 702,583.62 |  |
|  | 3 | **Main Lobby - Truss Framing - South Elevation** |  | 2015-01-15 | 2015-07-30 |  |  |  |  |  |
| C-SS-ML-454 |  | Embedded Plates within Ground Floor Slab | 5d | 2015-01-15 | 2015-01-20 | C-CS-Su-A-GF-01 SS, C-CS-Su-A-GF-01 FF, SD-CS-L0-1182 | 65d | 27d | 230,747.51 |  |
| C-SS-ML-464 |  | Embedded Plates within walls & Columns at Second floor | 5d | 2015-02-23 | 2015-02-28 | C-CS-S-L2-2 SS, C-CS-S-L2-2 FF, C-SS-ML-454 | 38d | 24d | 230,747.51 |  |
| C-SS-ML-294 |  | Embedded Plates within walls & Columns at Fourth floor | 5d | 2015-03-29 | 2015-04-02 | PQ-CS-C-252, P-CS-C-443, C-CS-Su-A-GF-01, C-CS-S-L4-42 SS, C-CS-S-L4-42 FF, C-SS-ML-464 | 14d | 0d | 230,747.51 |  |
| C-SS-ML-304 |  | Installation structural steel Vertical elements & implementation of fire proofing from ground to level 2 | 25d | 2015-04-04 | 2015-05-02 | C-SS-ML-294 | 14d | 0d | 1,029,172.08 |  |
| C-SS-ML-314 |  | Installation of structural steel suspended decking & implementation of fire proofing at level 2 | 25d | 2015-05-03 | 2015-05-31 | C-SS-ML-304 | 14d | 0d | 745,555.79 |  |
| C-SS-ML-324 |  | Installation of Vertical elements & implementation of fire proofing from level 2 to level 4 | 25d | 2015-06-01 | 2015-06-29 | C-SS-ML-314 | 14d | 0d | 1,029,172.08 |  |
| C-SS-ML-334 |  | Installation of Horizontal elements & implementation of fire proofing at level 4 | 25d | 2015-06-30 | 2015-07-30 | C-SS-ML-324 | 14d | 0d | 745,555.79 |  |
|  | 1 | **Entrance Canopy - East Elevation** |  | 2015-02-25 | 2015-06-11 |  |  |  |  |  |
| C-SS-EC-124 |  | Installation of Embeded plates within concrete columns & walls at L1 to L2 | 2d | 2015-02-25 | 2015-02-26 | C-CS-S-L1-02 SS+2d, C-CS-S-L1-02 FF, PQ-CS-C-212, C-CS-GF-21 | 91d | 46d | 58,546.32 | S |
| C-SS-EC-134 |  | Installation of Cable rods for entrance canopy | 4d | 2015-04-22 | 2015-04-26 | C-SS-EC-124, P-CS-C-363 | 45d | 0d | 17,501.39 | S |
| C-SS-EC-144 |  | Installation of canopy structural steel main elements & implementation of fire proofing | 20d | 2015-04-27 | 2015-05-19 | C-SS-EC-134, P-CS-C-363 | 45d | 0d | 134,413.46 | S |
| C-SS-EC-154 |  | Installation of canopy structural steel Secondary elements & implementation of fire proofing | 20d | 2015-05-20 | 2015-06-11 | C-SS-EC-144 | 45d | 21d | 128,788.02 | S |
|  | 5 | **Swimming Pool Decking North Elevation** |  | 2015-11-11 | 2016-03-01 |  |  |  |  |  |
| C-SS-SP-344 |  | RC pedestal structural reinforcement for the swimming pool at level 30 | 10d | 2015-11-11 | 2015-11-22 | SD-CS-L0-1232, P-CS-C-523, C-CS-S-L31-62, PQ-CS-C-292, C-CS-L30-91 | 2d | 0d | 167,409.14 |  |
| C-SS-SP--354 |  | Columns from Level 30 to level 32 | 12d | 2015-11-23 | 2015-12-06 | C-SS-SP-344 | 2d | 0d | 251,478.32 |  |
| C-SS-SP-364 |  | Installation of Connection plates at level 32 Slab | 5d | 2015-12-07 | 2015-12-12 | C-SS-SP--354 | 2d | 0d | 62,869.58 |  |
| C-SS-SP-374 |  | Installation of Horizontal structural steel main elements including E-poxy coating at level 32 | 25d | 2015-12-13 | 2016-01-11 | C-SS-SP-364 | 2d | 0d | 451,337.95 |  |
| C-SS-SP-384 |  | Installation of Horizontal structural steel secondary elements including E-poxy coating at level 32 | 16d | 2016-01-12 | 2016-01-30 | C-SS-SP-374 | 2d | 0d | 388,468.37 |  |
| C-SP-MRP-001 |  | FRC Concrete Decking on the structural steel | 8d | 2016-01-31 | 2016-02-08 | C-SS-SP-384, PQ-CS-C-1412, SD-CS-B3-1092 | 2d | 0d |  |  |
| C-SP-MRP-011 |  | Columns & Walls | 8d | 2016-02-09 | 2016-02-18 | C-SP-MRP-001 | 2d | 0d |  |  |
| C-SP-MRP-021 |  | FRC Concrete Slab | 10d | 2016-02-20 | 2016-03-01 | C-SP-MRP-011 | 2d | 0d |  |  |

Notes:
- C-SS-MC-164: Expenses: MC 185640; B 41670
- C-SS-MC-174: Expenses: MC 433159; FP 83784.4
- C-SS-MC-184: Expenses: MC 618799; FP 83784.4
- C-SS-ML-454: Expenses: ML 189078; B 41670
- C-SS-ML-464: Expenses: ML 189078; B 41670
- C-SS-ML-294: Expenses: ML 189078; B 41670
- C-SS-ML-304: Expenses: ML 945388; FP 83784.4
- C-SS-ML-314: Expenses: ML 661771; FP 83784.4
- C-SS-ML-324: Expenses: ML 945388; FP 83784.4
- C-SS-ML-334: Expenses: ML 661771; FP 83784.4
- C-SS-EC-124: Expenses: EC 16876.3; B 41670
- C-SS-EC-134: Expenses: EC 17501.4
- C-SS-EC-144: Expenses: EC 50629; FP 83784.4
- C-SS-EC-154: Expenses: EC 45003.6; FP 83784.4
- C-SS-SP-344: Expenses: SP 125739; B 41670
- C-SS-SP--354: Expenses: SP 251478
- C-SS-SP-364: Expenses: SP 62869.6
- C-SS-SP-374: Expenses: SP 440087; E 11250.9
- C-SS-SP-384: Expenses: SP 377217; E 11250.9

| ID | WBS | Activity | Duration | Start | Finish | Predecessors | Total float | Free float | Cost | AREA |
| --- | --- | --- | --- | --- | --- | --- | --- | --- | --- | --- |
|  | 9 | **Structural Steel Columns at 33rd Floor** |  | 2015-11-05 | 2015-11-11 |  |  |  |  |  |
| C-SS-SC-L33-82 |  | Installation of Embeded plates within concrete Slab at level 33 | 2d | 2015-11-05 | 2015-11-07 | C-CS-S-L33-102 SS+2d, C-CS-S-L33-102 FF, P-CS-C-163, PQ-CS-C-352 | 0d |  | 9,375.75 | S |
| C-SS-SC-L33-83 |  | Installation of Structural steel columns L33 to L34 | 1d | 2015-11-08 | 2015-11-08 | C-SS-SC-L33-82 | 0d |  | 178,139.16 | S |
| C-SS-SC-L33-84 |  | FRC Concrete Surrounding the structural steel columns L33 to L34 | 3d | 2015-11-09 | 2015-11-11 | C-SS-SC-L33-83 | 0d |  |  | S |
|  | 7 | **Pergola Support** |  | 2015-11-29 | 2016-03-06 |  |  |  |  |  |
| C-SS-PS-424 |  | Installation of Embeded plates within concrete at level 35 & Level 36 | 10d | 2015-11-29 | 2015-12-09 | C-CS-S-L36-102, P-CS-C-603 | 81d | 43d | 6,563.02 |  |
| C-SS-PS-434 |  | Installation of Cable Rod for Pergola | 5d | 2016-01-31 | 2016-02-04 | C-SS-PS-424, C-SS-SP-384, PQ-CS-C-332 | 38d | 0d | 37,502.98 |  |
| C-SS-PS-444 |  | Installation of Pergola | 25d | 2016-02-06 | 2016-03-06 | C-SS-PS-434 | 38d | 37d | 484,615.55 |  |
|  | 4 | **Roof Crown Support** |  | 2016-03-31 | 2016-05-14 |  |  |  |  |  |
| C-SS-RCS-94 |  | RC pedestal structural reinforcement for the roof crown | 10d | 2016-03-31 | 2016-04-11 | P-CS-C-483, C-CS-S-L44-82 | 7d | 0d | 299,502.97 |  |
| C-SS-RCS-404 |  | Installation of Horizontal structural steel main elements | 18d | 2016-04-12 | 2016-05-02 | C-SS-RCS-94, PQ-CS-C-272 | 7d | 0d | 773,498.98 |  |
| C-SS-RCS-414 |  | Installation of Horizontal structural steel secondary elements | 25d | 2016-04-16 | 2016-05-14 | C-SS-RCS-404 FF+10d | 7d | 0d | 687,554.65 |  |
|  | 11 | **Catwalks** |  | 2015-11-22 | 2016-03-19 |  |  |  |  |  |
|  | 8 | **Catwalk at Mezzanine Floor** |  | 2015-11-22 | 2016-02-18 |  |  |  |  |  |
| C-SS-CW-001 |  | Installation of the Brackets and Pad | 25d | 2015-11-22 | 2015-12-21 | C-CS-MZ-31, C-CS-MZ-31 FF, P-CS-C-683 FF | 86d | 0d | 26,976.1 |  |
| C-SS-CW-002 |  | Installation of the main elements of the Catwalks | 25d | 2015-12-22 | 2016-01-19 | C-SS-CW-001 | 86d | 0d | 134,880.51 |  |
| C-SS-CW-003 |  | Installation of the Secondary elements of the Catwalks | 25d | 2016-01-20 | 2016-02-18 | C-SS-CW-002 | 86d | 0d | 107,904.41 |  |
|  | 1 | **Catwalk at 35th FLoor** |  | 2015-12-22 | 2016-03-19 |  |  |  |  |  |
| C-SS-CW-3 |  | Installation of the Brackets and Pad | 25d | 2015-12-22 | 2016-01-19 | C-CS-L35-141, P-CS-C-683 | 185d | 0d | 26,976.1 |  |
| C-SS-CW-13 |  | Installation of the main elements of the Catwalks | 25d | 2016-01-20 | 2016-02-18 | C-SS-CW-3 | 185d | 0d | 134,880.51 |  |
| C-SS-CW-23 |  | Installation of the Secondary elements of the Catwalks | 25d | 2016-02-20 | 2016-03-19 | C-SS-CW-13 | 185d | 172d | 107,904.41 |  |
|  | 5 | **Facade** |  | 2015-01-28 | 2017-04-16 |  |  |  |  |  |
|  | 7 | **Embeded plates within the facade** |  | 2015-01-28 | 2016-03-29 |  |  |  |  |  |
| C-CS-MZ-41 |  | Installation of Embeded Plates within FRC Slab at Ground Mezzanine FLoor | 2d | 2015-01-28 | 2015-01-29 | C-CS-S-MZ-01 SS, PQ-CS-C-1552, SD-CS-L0-1292, SD-CS-L0-1452, SD-CS-L0-1612, SD-CS-L0-1772 | 3d |  | 59,642.08 |  |
| C-CS-L1-61 |  | Installation of Embeded Plates within FRC Slab at Level 1 | 2d | 2015-02-08 | 2015-02-09 | C-CS-S-L1-01 SS+2d | 1d |  | 59,642.08 |  |
| C-CS-L1-71 |  | Installation of Embeded Plates within FRC Slab at Level 1 Mezzanine | 2d | 2015-02-17 | 2015-02-18 | C-CS-S-L1M-2 SS+2d | 1d |  | 59,642.08 |  |
| C-CS-L2-61 |  | Installation of Embeded Plates within FRC Slab at Level 2 | 2d | 2015-02-25 | 2015-02-26 | C-CS-S-L2-2 SS+2d | 1d |  | 59,642.08 |  |
| C-CS-L3-71 |  | Installation of Embeded Plates within FRC Slab at Level 3 | 2d | 2015-03-05 | 2015-03-07 | C-CS-S-L3-22 SS+2d | 1d |  | 59,642.08 |  |
| C-CS-L4-81 |  | Installation of Embeded Plates within FRC Slab at Level 4 | 2d | 2015-03-14 | 2015-03-15 | C-CS-S-L4-42 SS+2d | 1d |  | 59,642.08 |  |
| C-CS-L5-91 |  | Installation of Embeded Plates within FRC Slab at Level 5 | 2d | 2015-03-22 | 2015-03-23 | C-CS-S-L5-62 SS+2d, SD-CS-L0-1312, SD-CS-L0-1472, SD-CS-L0-1632, SD-CS-L0-1792 | 1d |  | 59,642.08 |  |
| C-CS-L6-101 |  | Installation of Embeded Plates within FRC Slab at Level 6 | 2d | 2015-03-30 | 2015-03-31 | C-CS-S-L6-2 SS+2d | 1d |  | 59,642.08 |  |
| C-CS-L7-111 |  | Installation of Embeded Plates within FRC Slab at Level 7 | 2d | 2015-04-07 | 2015-04-08 | C-CS-S-L7-2 SS+2d | 1d |  | 59,642.08 |  |
| C-CS-L8-121 |  | Installation of Embeded Plates within FRC Slab at Level 8 | 2d | 2015-04-15 | 2015-04-16 | C-CS-S-L8-22 SS+2d | 1d |  | 59,642.08 |  |
| C-CS-L9-131 |  | Installation of Embeded Plates within FRC Slab at Level 9 | 2d | 2015-04-23 | 2015-04-25 | C-CS-S-L9-42 SS+2d | 1d |  | 59,642.08 |  |
| C-CS-L10-141 |  | Installation of Embeded Plates within FRC Slab at Level 10 | 2d | 2015-05-02 | 2015-05-03 | C-CS-S-L10-62 SS+2d | 1d |  | 59,642.08 |  |
| C-CS-L11-151 |  | Installation of Embeded Plates within FRC Slab at Level 11 | 2d | 2015-05-10 | 2015-05-11 | C-CS-S-L11-82 SS+2d, SD-CS-L0-1332, SD-CS-L0-1492, SD-CS-L0-1652, SD-CS-L0-1812 | 1d |  | 59,642.08 |  |
| C-CS-L12-161 |  | Installation of Embeded Plates within FRC Slab at Level 12 | 2d | 2015-05-18 | 2015-05-19 | C-CS-S-L12-22 SS+2d | 1d |  | 59,642.08 |  |
| C-CS-L13-171 |  | Installation of Embeded Plates within FRC Slab at Level 13 | 2d | 2015-05-26 | 2015-05-27 | C-CS-S-L13-62 SS+2d | 1d |  | 59,642.08 |  |
| C-CS-L14-181 |  | Installation of Embeded Plates within FRC Slab at Level 14 | 2d | 2015-06-03 | 2015-06-04 | C-CS-S-L14-82 SS+2d | 1d |  | 59,642.08 |  |
| C-CS-L15-191 |  | Installation of Embeded Plates within FRC Slab at Level 15 | 2d | 2015-06-11 | 2015-06-13 | C-CS-S-L15-102 SS+2d | 1d |  | 59,642.08 |  |
| C-CS-L16-201 |  | Installation of Embeded Plates within FRC Slab at Level 16 | 2d | 2015-06-20 | 2015-06-21 | C-CS-S-L16-22 SS+2d | 1d |  | 59,642.08 |  |
| C-CS-L17-211 |  | Installation of Embeded Plates within FRC Slab at Level 17 | 2d | 2015-06-28 | 2015-06-29 | C-CS-S-L17-42 SS+2d, SD-CS-L0-1352, SD-CS-L0-1512, SD-CS-L0-1672, SD-CS-L0-1832 | 1d |  | 59,642.08 |  |
| C-CS-L18-221 |  | Installation of Embeded Plates within FRC Slab at Level 18 | 2d | 2015-07-07 | 2015-07-08 | C-CS-S-L18-62 SS+2d | 2d |  | 59,642.08 |  |
| C-CS-L19-231 |  | Installation of Embeded Plates within FRC Slab at Level 19 | 2d | 2015-07-19 | 2015-07-20 | C-CS-S-L19-82 SS+2d | 1d |  | 59,642.08 |  |
| C-CS-L20-241 |  | Installation of Embeded Plates within FRC Slab at Level 20 | 2d | 2015-07-27 | 2015-07-28 | C-CS-S-L20-102 SS+2d | 1d |  | 59,642.08 |  |
| C-CS-L21-251 |  | Installation of Embeded Plates within FRC Slab at Level 21 | 2d | 2015-08-04 | 2015-08-05 | C-CS-S-L21-122 SS+2d | 1d |  | 59,642.08 |  |
| C-CS-L22-261 |  | Installation of Embeded Plates within FRC Slab at Level 22 | 2d | 2015-08-12 | 2015-08-13 | C-CS-S-L22-42 SS+2d | 1d |  | 59,642.08 |  |
| C-CS-L23-271 |  | Installation of Embeded Plates within FRC Slab at Level 23 | 2d | 2015-08-20 | 2015-08-22 | C-CS-S-L23-2 SS+2d, SD-CS-L0-1372, SD-CS-L0-1532, SD-CS-L0-1692, SD-CS-L0-1852 | 0d |  | 59,642.08 |  |
| C-CS-L24-281 |  | Installation of Embeded Plates within FRC Slab at Level 24 | 2d | 2015-08-27 | 2015-08-29 | C-CS-S-L24-22 SS+2d | 0d |  | 59,642.08 |  |
| C-CS-L25-280 |  | Installation of Embeded Plates within FRC Slab at Level 25 | 2d | 2015-09-03 | 2015-09-05 | C-CS-S-L25-42 SS+2d | 0d |  | 59,642.08 |  |
| C-CS-L26-61 |  | Installation of Embeded Plates within FRC Slab at Level 26 | 2d | 2015-09-10 | 2015-09-12 | C-CS-S-L26-62 SS+2d | 0d |  | 59,642.08 |  |
| C-CS-L27-71 |  | Installation of Embeded Plates within FRC Slab at Level 27 | 2d | 2015-09-17 | 2015-09-19 | C-CS-S-L27-82 SS+2d | 0d |  | 59,642.08 |  |
| C-CS-L28-81 |  | Installation of Embeded Plates within FRC Slab at Level 28 | 2d | 2015-09-28 | 2015-09-29 | C-CS-S-L28-22 SS+2d | 0d |  | 59,642.08 |  |
| C-CS-L29-91 |  | Installation of Embeded Plates within FRC Slab at Level 29 | 2d | 2015-10-05 | 2015-10-06 | C-CS-S-L29-22 SS+2d | 0d |  | 59,642.08 |  |
| C-CS-L30-101 |  | Installation of Embeded Plates within FRC Slab at Level 30 | 2d | 2015-10-12 | 2015-10-13 | C-CS-S-L30-42 SS+2d, SD-CS-L0-1392, SD-CS-L0-1552, SD-CS-L0-1712, SD-CS-L0-1872 | 0d |  | 59,642.08 |  |
| C-CS-L31-111 |  | Installation of Embeded Plates within FRC Slab at Level 31 | 2d | 2015-10-19 | 2015-10-20 | C-CS-S-L31-62 SS+2d | 0d |  | 59,642.08 |  |
| C-CS-L32-121 |  | Installation of Embeded Plates within FRC Slab at Level 32 | 2d | 2015-10-26 | 2015-10-27 | C-CS-S-L32-82 SS+2d | 1d |  | 59,642.08 |  |
| C-CS-L33-131 |  | Installation of Embeded Plates within FRC Slab at Level 33 | 2d | 2015-11-04 | 2015-11-05 | C-CS-S-L33-102 SS+2d | 1d |  | 59,642.08 |  |
| C-CS-L34-141 |  | Installation of Embeded Plates within FRC Slab at Level 34 | 2d | 2015-11-12 | 2015-11-14 | C-CS-S-L34-42 SS+2d | 0d |  | 59,642.08 |  |
| C-CS-L35-151 |  | Installation of Embeded Plates within FRC Slab at Level 35 | 2d | 2015-11-19 | 2015-11-21 | C-CS-S-L35-82 SS+2d | 0d |  | 59,642.08 |  |
| C-CS-L36-161 |  | Installation of Embeded Plates within FRC Slab at Level 36 | 2d | 2015-11-26 | 2015-11-28 | C-CS-S-L36-102 SS+2d | 0d |  | 59,642.08 |  |
| C-CS-L37-171 |  | Installation of Embeded Plates within FRC Slab at Level 37 | 2d | 2015-12-03 | 2015-12-05 | C-CS-S-L37-122 SS+2d, SD-CS-L0-1412, SD-CS-L0-1572, SD-CS-L0-1732, SD-CS-L0-1892 | 0d |  | 59,642.08 |  |
| C-CS-L38-181 |  | Installation of Embeded Plates within FRC Slab at Level 38 | 2d | 2015-12-10 | 2015-12-12 | C-CS-S-L38-42 SS+2d | 0d |  | 59,642.08 |  |
| C-CS-L39-191 |  | Installation of Embeded Plates within FRC Slab at Level 39 | 2d | 2015-12-17 | 2015-12-20 | C-CS-S-L39-62 SS+2d | 0d |  | 59,642.08 |  |
| C-CS-L40-201 |  | Installation of Embeded Plates within FRC Slab at Level 40 | 2d | 2015-12-26 | 2015-12-27 | C-CS-S-L40-82 SS+2d | 0d |  | 59,642.08 |  |
| C-CS-L41-211 |  | Installation of Embeded Plates within FRC Slab at Level 41 | 2d | 2016-01-02 | 2016-01-03 | C-CS-S-L41-102 SS+2d | 0d |  | 59,642.08 |  |
| C-CS-L42-221 |  | Installation of Embeded Plates within FRC Slab at Level 42 | 2d | 2016-01-09 | 2016-01-10 | C-CS-S-L42-122 SS+2d | 0d |  | 59,642.08 |  |
| C-CS-L43-231 |  | Installation of Embeded Plates within FRC Slab at Level 43 | 2d | 2016-01-16 | 2016-01-17 | C-CS-S-L43-142 SS+2d | 0d |  | 59,642.08 |  |
| C-CS-L44-241 |  | Installation of Embeded Plates within FRC Slab at Level 44 | 2d | 2016-01-23 | 2016-01-24 | C-CS-S-L44-62 SS+2d, SD-CS-L0-1432, SD-CS-L0-1592, SD-CS-L0-1752, SD-CS-L0-1902, SD-CS-L0-1912 | 0d |  | 59,642.08 |  |
| C-CS-L45-291 |  | Installation of Embeded Plates within FRC Slab at Level 45 | 2d | 2016-01-30 | 2016-01-31 | C-CS-S-L40-102 SS+2d | 0d |  | 59,642.08 |  |

Notes:
- C-SS-SC-L33-82: Expenses: C 9375.75
- C-SS-SC-L33-83: Expenses: C 178139
- C-SS-PS-424: Expenses: P 6563.02
- C-SS-PS-434: Expenses: P 37503
- C-SS-PS-444: Expenses: P 124697; F 359918
- C-SS-RCS-94: Expenses: RC 257833; B 41670
- C-SS-RCS-404: Expenses: RC 773499
- C-SS-RCS-414: Expenses: RC 687555
- C-SS-CW-001: Expenses: CW 26976.1
- C-SS-CW-002: Expenses: CW 134881
- C-SS-CW-003: Expenses: CW 107904
- C-SS-CW-3: Expenses: CW 26976.1
- C-SS-CW-13: Expenses: CW 134881
- C-SS-CW-23: Expenses: CW 107904
- C-CS-MZ-41: Expenses: SF 15528.3; CE 37621.2; A 6492.6
- C-CS-L1-61: Expenses: SF 15528.3; CE 37621.2; A 6492.6
- C-CS-L1-71: Expenses: SF 15528.3; CE 37621.2; A 6492.6
- C-CS-L2-61: Expenses: SF 15528.3; CE 37621.2; A 6492.6
- C-CS-L3-71: Expenses: SF 15528.3; CE 37621.2; A 6492.6
- C-CS-L4-81: Expenses: SF 15528.3; CE 37621.2; A 6492.6
- C-CS-L5-91: Expenses: SF 15528.3; CE 37621.2; A 6492.6
- C-CS-L6-101: Expenses: SF 15528.3; CE 37621.2; A 6492.6
- C-CS-L7-111: Expenses: SF 15528.3; CE 37621.2; A 6492.6
- C-CS-L8-121: Expenses: SF 15528.3; CE 37621.2; A 6492.6
- C-CS-L9-131: Expenses: SF 15528.3; CE 37621.2; A 6492.6
- C-CS-L10-141: Expenses: SF 15528.3; CE 37621.2; A 6492.6
- C-CS-L11-151: Expenses: SF 15528.3; CE 37621.2; A 6492.6
- C-CS-L12-161: Expenses: SF 15528.3; CE 37621.2; A 6492.6
- C-CS-L13-171: Expenses: SF 15528.3; CE 37621.2; A 6492.6
- C-CS-L14-181: Expenses: SF 15528.3; CE 37621.2; A 6492.6
- C-CS-L15-191: Expenses: SF 15528.3; CE 37621.2; A 6492.6
- C-CS-L16-201: Expenses: SF 15528.3; CE 37621.2; A 6492.6
- C-CS-L17-211: Expenses: SF 15528.3; CE 37621.2; A 6492.6
- C-CS-L18-221: Expenses: SF 15528.3; CE 37621.2; A 6492.6
- C-CS-L19-231: Expenses: SF 15528.3; CE 37621.2; A 6492.6
- C-CS-L20-241: Expenses: SF 15528.3; CE 37621.2; A 6492.6
- C-CS-L21-251: Expenses: SF 15528.3; CE 37621.2; A 6492.6
- C-CS-L22-261: Expenses: SF 15528.3; CE 37621.2; A 6492.6
- C-CS-L23-271: Expenses: SF 15528.3; CE 37621.2; A 6492.6
- C-CS-L24-281: Expenses: SF 15528.3; CE 37621.2; A 6492.6
- C-CS-L25-280: Expenses: SF 15528.3; CE 37621.2; A 6492.6
- C-CS-L26-61: Expenses: SF 15528.3; CE 37621.2; A 6492.6
- C-CS-L27-71: Expenses: SF 15528.3; CE 37621.2; A 6492.6
- C-CS-L28-81: Expenses: SF 15528.3; CE 37621.2; A 6492.6
- C-CS-L29-91: Expenses: SF 15528.3; CE 37621.2; A 6492.6
- C-CS-L30-101: Expenses: SF 15528.3; CE 37621.2; A 6492.6
- C-CS-L31-111: Expenses: SF 15528.3; CE 37621.2; A 6492.6
- C-CS-L32-121: Expenses: SF 15528.3; CE 37621.2; A 6492.6
- C-CS-L33-131: Expenses: SF 15528.3; CE 37621.2; A 6492.6
- C-CS-L34-141: Expenses: SF 15528.3; CE 37621.2; A 6492.6
- C-CS-L35-151: Expenses: SF 15528.3; CE 37621.2; A 6492.6
- C-CS-L36-161: Expenses: SF 15528.3; CE 37621.2; A 6492.6
- C-CS-L37-171: Expenses: SF 15528.3; CE 37621.2; A 6492.6
- C-CS-L38-181: Expenses: SF 15528.3; CE 37621.2; A 6492.6
- C-CS-L39-191: Expenses: SF 15528.3; CE 37621.2; A 6492.6
- C-CS-L40-201: Expenses: SF 15528.3; CE 37621.2; A 6492.6
- C-CS-L41-211: Expenses: SF 15528.3; CE 37621.2; A 6492.6
- C-CS-L42-221: Expenses: SF 15528.3; CE 37621.2; A 6492.6
- C-CS-L43-231: Expenses: SF 15528.3; CE 37621.2; A 6492.6
- C-CS-L44-241: Expenses: SF 15528.3; CE 37621.2; A 6492.6
- C-CS-L45-291: Expenses: SF 15528.3; CE 37621.2; A 6492.6

| ID | WBS | Activity | Duration | Start | Finish | Predecessors | Total float | Free float | Cost |
| --- | --- | --- | --- | --- | --- | --- | --- | --- | --- |
| C-CS-L46-301 |  | Installation of Embeded Plates within FRC Slab at Level 46 | 2d | 2016-02-06 | 2016-02-07 | C-CS-S-L41-122 SS+2d | 0d |  | 59,642.08 |
| C-CS-L47-311 |  | Installation of Embeded Plates within FRC Slab at Level 47 | 2d | 2016-02-14 | 2016-02-15 | C-CS-S-L42-142 SS+2d | 0d |  | 59,642.08 |
| C-CS-L48-321 |  | Installation of Embeded Plates within FRC Slab at Level 48 | 2d | 2016-02-21 | 2016-02-22 | C-CS-S-L43-162 SS+2d | 0d |  | 59,642.08 |
| C-CS-L49-331 |  | Installation of Embeded Plates within FRC Slab at Level 49 | 2d | 2016-02-28 | 2016-02-29 | C-CS-S-L44-72 SS+2d | 0d |  | 59,642.08 |
| C-CS-L50-341 |  | Installation of Embeded Plates within FRC Slab at Level 50 | 2d | 2016-03-07 | 2016-03-08 | C-CS-S-L41-142 SS+2d | 0d |  | 59,642.08 |
| C-CS-L51-351 |  | Installation of Embeded Plates within FRC Slab at Level 51 | 2d | 2016-03-14 | 2016-03-15 | C-CS-S-L42-162 SS+2d | 0d |  | 59,642.08 |
| C-CS-LR-341 |  | Installation of Embeded Plates within FRC Slab at Lower Roof | 2d | 2016-03-21 | 2016-03-22 | C-CS-S-L43-182 SS+2d | 0d |  | 59,642.08 |
| C-CS-TR-351 |  | Installation of Embeded Plates within FRC Slab at Top Roof | 2d | 2016-03-28 | 2016-03-29 | C-CS-S-L44-82 SS+2d | 3d |  | 59,642.08 |
|  | 5 | **Unitized Panels - Standard** |  | 2015-06-27 | 2016-06-30 |  |  |  |  |
|  | 1 | **Ground to 4th Floor** |  | 2015-06-27 | 2015-09-05 |  |  |  |  |
| C-F-UP-001 |  | Installation of Untized Panels (Standard) (Frame, Stones & Perforated Aluminum) at North Side - Ground to 4th floor | 9d | 2015-06-27 | 2015-07-06 | P-MEP-FF-3243, P-MEP-FF-3203, P-MEP-FF-3163, P-MEP-FF-3123, P-MEP-FF-3083, P-MEP-FF-3283, P-MEP-FF-3323, C-CS-S-L10-62, P-MEP-E-4883 | 24d | 0d | 1,836,976.04 |
| C-F-UP-1 |  | Installation of Untized Panels (Standard) (Frame, Stones & Perforated Aluminum) at East Side - Ground to 4th floor | 9d | 2015-07-07 | 2015-07-19 | C-F-UP-001, C-SS-EC-154 | 24d | 0d | 1,033,299.02 |
| C-F-UP-11 |  | Installation of Untized Panels (Standard) (Frame, Stones & Perforated Aluminum) at South Side - Ground to 4th floor | 9d | 2015-08-01 | 2015-08-10 | C-F-UP-1, C-SS-ML-334 | 14d | 0d | 1,836,976.04 |
| C-F-UP-21 |  | Installation of Untized Panels (Standard) (Frame, Stones & Perforated Aluminum) at West Side - Ground to 4th floor | 9d | 2015-08-26 | 2015-09-05 | C-F-UP-11, C-SS-FD-284, C-S-SD-21 | 1d | 0d | 1,033,299.02 |
|  | 2 | **5th Floor to 10th Floor** |  | 2015-09-06 | 2015-10-20 |  |  |  |  |
| C-F-UP-31 |  | Installation of Untized Panels (Standard) (Frame, Stones & Perforated Aluminum) at North Side - 5th floor to 10th Floor | 9d | 2015-09-06 | 2015-09-15 | C-F-UP-21 | 1d | 0d | 1,836,976.04 |
| C-F-UP-41 |  | Installation of Untized Panels (Standard) (Frame, Stones & Perforated Aluminum) at East Side - 5th floor to 10th Floor | 9d | 2015-09-16 | 2015-09-29 | C-F-UP-31 | 1d | 0d | 1,033,299.02 |
| C-F-UP-51 |  | Installation of Untized Panels (Standard) (Frame, Stones & Perforated Aluminum) at South Side - 5th floor to 10th Floor | 9d | 2015-09-30 | 2015-10-10 | C-F-UP-41 | 1d | 0d | 1,836,976.04 |
| C-F-UP-61 |  | Installation of Untized Panels (Standard) (Frame, Stones & Perforated Aluminum) at West Side - 5th floor to 10th Floor | 9d | 2015-10-11 | 2015-10-20 | C-F-UP-51 | 1d | 0d | 1,033,299.02 |
|  | 3 | **11th Floor to 16th Floor** |  | 2015-10-21 | 2015-12-01 |  |  |  |  |
| C-F-UP-71 |  | Installation of Untized Panels (Standard) (Frame, Stones & Perforated Aluminum) at North Side - 11th floor to 16th Floo | 9d | 2015-10-21 | 2015-10-31 | C-F-UP-61 | 1d | 0d | 1,836,976.04 |
| C-F-UP-81 |  | Installation of Untized Panels (Standard) (Frame, Stones & Perforated Aluminum) at East Side - 11th floor to 16th Floor | 9d | 2015-11-01 | 2015-11-10 | C-F-UP-71 | 1d | 0d | 1,033,299.02 |
| C-F-UP-91 |  | Installation of Untized Panels (Standard) (Frame, Stones & Perforated Aluminum) at South Side - 11th floor to 16th Floo | 9d | 2015-11-11 | 2015-11-21 | C-F-UP-81 | 1d | 0d | 1,836,976.04 |
| C-F-UP-101 |  | Installation of Untized Panels (Standard) (Frame, Stones & Perforated Aluminum) at West Side - 11th floor to 16th Floo | 9d | 2015-11-22 | 2015-12-01 | C-F-UP-91 | 1d | 0d | 1,033,299.02 |

Notes:
- C-CS-L46-301: Expenses: SF 15528.3; CE 37621.2; A 6492.6
- C-CS-L47-311: Expenses: SF 15528.3; CE 37621.2; A 6492.6
- C-CS-L48-321: Expenses: SF 15528.3; CE 37621.2; A 6492.6
- C-CS-L49-331: Expenses: SF 15528.3; CE 37621.2; A 6492.6
- C-CS-L50-341: Expenses: SF 15528.3; CE 37621.2; A 6492.6
- C-CS-L51-351: Expenses: SF 15528.3; CE 37621.2; A 6492.6
- C-CS-LR-341: Expenses: SF 15528.3; CE 37621.2; A 6492.6
- C-CS-TR-351: Expenses: SF 15528.3; CE 37621.2; A 6492.6
- C-F-UP-001: Expenses: QN 478272; GN 1158732; AN 199972
- C-F-UP-1: Expenses: QE 269028; GE 651787; AE 112484
- C-F-UP-11: Expenses: QS 478272; GS 1158732; AS 199972
- C-F-UP-21: Expenses: QW 269028; GW 651787; AW 112484
- C-F-UP-31: Expenses: QN 478272; GN 1158732; AN 199972
- C-F-UP-41: Expenses: QE 269028; GE 651787; AE 112484
- C-F-UP-51: Expenses: QS 478272; GS 1158732; AS 199972
- C-F-UP-61: Expenses: QW 269028; GW 651787; AW 112484
- C-F-UP-71: Expenses: QN 478272; GN 1158732; AN 199972
- C-F-UP-81: Expenses: QE 269028; GE 651787; AE 112484
- C-F-UP-91: Expenses: QS 478272; GS 1158732; AS 199972
- C-F-UP-101: Expenses: QW 269028; GW 651787; AW 112484

| ID | WBS | Activity | Duration | Start | Finish | Predecessors | Total float | Free float | Cost |
| --- | --- | --- | --- | --- | --- | --- | --- | --- | --- |
|  | 4 | **17th Floor to 22nd Floor** |  | 2015-12-02 | 2016-01-13 |  |  |  |  |
| C-F-UP-111 |  | Installation of Untized Panels (Standard) (Frame, Stones & Perforated Aluminum) at North Side - 17th to 22nd floor | 9d | 2015-12-02 | 2015-12-12 | C-F-UP-101 | 1d | 0d | 1,836,976.04 |
| C-F-UP-121 |  | Installation of Untized Panels (Standard) (Frame, Stones & Perforated Aluminum) at East Side - 17th to 22nd floor | 9d | 2015-12-13 | 2015-12-23 | C-F-UP-111 | 1d | 0d | 1,033,299.02 |
| C-F-UP-131 |  | Installation of Untized Panels (Standard) (Frame, Stones & Perforated Aluminum) at South Side - 17th to 22nd floor | 9d | 2015-12-24 | 2016-01-03 | C-F-UP-121 | 1d | 0d | 1,836,976.04 |
| C-F-UP-141 |  | Installation of Untized Panels (Standard) (Frame, Stones & Perforated Aluminum) at West Side - 17th to 22nd floor | 9d | 2016-01-04 | 2016-01-13 | C-F-UP-131 | 1d | 0d | 1,033,299.02 |
|  | 5 | **23rd Floor to 29th Floor** |  | 2016-01-14 | 2016-02-25 |  |  |  |  |
| C-F-UP-151 |  | Installation of Untized Panels (Standard) (Frame, Stones & Perforated Aluminum) at North Side - 23rd to 29th Floor | 9d | 2016-01-14 | 2016-01-24 | C-F-UP-141 | 1d | 0d | 1,836,976.04 |
| C-F-UP-161 |  | Installation of Untized Panels (Standard) (Frame, Stones & Perforated Aluminum) at East Side - 23rd to 29th Floor | 9d | 2016-01-25 | 2016-02-03 | C-F-UP-151 | 1d | 0d | 1,033,299.02 |
| C-F-UP-171 |  | Installation of Untized Panels (Standard) (Frame, Stones & Perforated Aluminum) at South Side - 23rd to 29th Floor | 9d | 2016-02-04 | 2016-02-15 | C-F-UP-161 | 1d | 0d | 1,836,976.04 |
| C-F-UP-181 |  | Installation of Untized Panels (Standard) (Frame, Stones & Perforated Aluminum) at West Side - 23rd to 29th Floor | 9d | 2016-02-16 | 2016-02-25 | C-F-UP-171 | 1d | 0d | 1,033,299.02 |
|  | 6 | **30th Floor ro 36th Floor** |  | 2016-02-27 | 2016-04-07 |  |  |  |  |
| C-F-UP-191 |  | Installation of Untized Panels (Standard) (Frame, Stones & Perforated Aluminum) at North Side - 30th to 36th Floor | 9d | 2016-02-27 | 2016-03-07 | C-F-UP-181, C-SS-SP-384 | 1d | 0d | 1,836,976.04 |
| C-F-UP-201 |  | Installation of Untized Panels (Standard) (Frame, Stones & Perforated Aluminum) at East Side - 30th to 36th Floor | 9d | 2016-03-08 | 2016-03-17 | C-F-UP-191 | 1d | 0d | 1,033,299.02 |
| C-F-UP-211 |  | Installation of Untized Panels (Standard) (Frame, Stones & Perforated Aluminum) at South Side - 30th to 36th Floor | 9d | 2016-03-19 | 2016-03-28 | C-F-UP-201 | 1d | 0d | 1,836,976.04 |
| C-F-UP-221 |  | Installation of Untized Panels (Standard) (Frame, Stones & Perforated Aluminum) at West Side - 30th to 36th Floor | 9d | 2016-03-29 | 2016-04-07 | C-F-UP-211 | 1d | 0d | 1,033,299.02 |
|  | 7 | **37th Floor to 43rd Floor** |  | 2016-04-09 | 2016-05-19 |  |  |  |  |
| C-F-UP-231 |  | Installation of Untized Panels (Standard) (Frame, Stones & Perforated Aluminum) at North Side - 37th to 43rd floor | 9d | 2016-04-09 | 2016-04-18 | C-F-UP-221, C-SS-PS-444 FF | 1d | 0d | 1,836,976.04 |
| C-F-UP-241 |  | Installation of Untized Panels (Standard) (Frame, Stones & Perforated Aluminum) at East Side - 37th to 43rd floor | 9d | 2016-04-19 | 2016-04-28 | C-F-UP-231 | 1d | 0d | 1,033,299.02 |
| C-F-UP-251 |  | Installation of Untized Panels (Standard) (Frame, Stones & Perforated Aluminum) at South Side - 37th to 43rd floor | 9d | 2016-04-30 | 2016-05-09 | C-F-UP-241 | 1d | 0d | 1,836,976.04 |
| C-F-UP-261 |  | Installation of Untized Panels (Standard) (Frame, Stones & Perforated Aluminum) at West Side - 37th to 43rd floor | 9d | 2016-05-10 | 2016-05-19 | C-F-UP-251 | 1d | 0d | 1,033,299.02 |
|  | 8 | **44th Floor to Upper roof level** |  | 2016-05-21 | 2016-06-30 |  |  |  |  |
| C-F-UP-271 |  | Installation of Untized Panels (Standard) (Frame, Stones & Perforated Aluminum) at North Side - 44th to Upper Roof | 9d | 2016-05-21 | 2016-05-30 | C-F-UP-261 | 1d | 0d | 1,836,976.04 |
| C-F-UP-281 |  | Installation of Untized Panels (Standard) (Frame, Stones & Perforated Aluminum) at East Side - 44th to Upper Roof | 9d | 2016-05-31 | 2016-06-09 | C-F-UP-271 | 1d | 0d | 1,033,299.02 |
| C-F-UP-291 |  | Installation of Untized Panels (Standard) (Frame, Stones & Perforated Aluminum) at South Side - 44th to Upper Roof | 9d | 2016-06-11 | 2016-06-20 | C-F-UP-281 | 1d | 0d | 1,836,976.04 |
| C-F-UP-301 |  | Installation of Untized Panels (Standard) (Frame, Stones & Perforated Aluminum) at West Side - 44th to Upper Roof | 9d | 2016-06-21 | 2016-06-30 | C-F-UP-291 | 1d |  | 1,033,299.02 |

Notes:
- C-F-UP-111: Expenses: QN 478272; GN 1158732; AN 199972
- C-F-UP-121: Expenses: QE 269028; GE 651787; AE 112484
- C-F-UP-131: Expenses: QS 478272; GS 1158732; AS 199972
- C-F-UP-141: Expenses: QW 269028; GW 651787; AW 112484
- C-F-UP-151: Expenses: QN 478272; GN 1158732; AN 199972
- C-F-UP-161: Expenses: QE 269028; GE 651787; AE 112484
- C-F-UP-171: Expenses: QS 478272; GS 1158732; AS 199972
- C-F-UP-181: Expenses: QW 269028; GW 651787; AW 112484
- C-F-UP-191: Expenses: QN 478272; GN 1158732; AN 199972
- C-F-UP-201: Expenses: QE 269028; GE 651787; AE 112484
- C-F-UP-211: Expenses: QS 478272; GS 1158732; AS 199972
- C-F-UP-221: Expenses: QW 269028; GW 651787; AW 112484
- C-F-UP-231: Expenses: QN 478272; GN 1158732; AN 199972
- C-F-UP-241: Expenses: QE 269028; GE 651787; AE 112484
- C-F-UP-251: Expenses: QS 478272; GS 1158732; AS 199972
- C-F-UP-261: Expenses: Qw 269028; GW 651787; AW 112484
- C-F-UP-271: Expenses: QN 478272; GN 1158732; AN 199972
- C-F-UP-281: Expenses: QE 269028; GE 651787; AE 112484
- C-F-UP-291: Expenses: QS 478272; GS 1158732; AS 199972
- C-F-UP-301: Expenses: QW 269028; GW 651787; AW 112484

| ID | WBS | Activity | Duration | Start | Finish | Predecessors | Total float | Free float | Cost |
| --- | --- | --- | --- | --- | --- | --- | --- | --- | --- |
|  | 6 | **Unitized Panels - Customized** |  | 2015-07-07 | 2016-06-26 |  |  |  |  |
|  | 1 | **North Elevation** |  | 2015-07-07 | 2016-06-26 |  |  |  |  |
|  | 1 | **Ground to 4th Floor** |  | 2015-07-07 | 2015-09-05 |  |  |  |  |
| C-F-NG4-011 |  | Installation of Aluminum Frames & Sub-Frames - Ground to 4th level | 25d | 2015-07-07 | 2015-08-06 | P-MEP-FF-3123, P-MEP-FF-3083, C-F-UP-001 | 78d | 0d | 131,212.57 |
| C-F-NG4-21 |  | Installation of Customized Panels - (Frame, Stones & Perforated Aluminum) - Ground to 4th level | 25d | 2015-08-08 | 2015-09-05 | P-MEP-FF-3323, C-F-NG4-011, P-MEP-FF-3283, P-MEP-FF-3243, P-MEP-FF-3203, P-MEP-FF-3163, P-MEP-E-4883 | 78d | 0d | 393,637.72 |
|  | 2 | **5th Floor to 10th Floor** |  | 2015-08-08 | 2015-10-07 |  |  |  |  |
| C-F-NG4-41 |  | Installation of Aluminum Frames & Sub-Frames - 5th to 10th Floor | 25d | 2015-08-08 | 2015-09-05 | C-F-NG4-011 | 78d | 0d | 131,212.57 |
| C-F-NG4-51 |  | Installation of Customized Panels - (Frame, Stones & Perforated Aluminum) - 5th to 10th Floor | 25d | 2015-09-06 | 2015-10-07 | C-F-NG4-41, C-F-NG4-21 | 78d | 0d | 393,637.72 |
|  | 3 | **11th Floor to 16th Floor** |  | 2015-09-06 | 2015-11-05 |  |  |  |  |
| C-F-NG4-81 |  | Installation of Aluminum Frames & Sub-Frames - 11th to 16th floor | 25d | 2015-09-06 | 2015-10-07 | C-F-NG4-41 | 78d | 0d | 131,212.57 |
| C-F-NG4-91 |  | Installation of Customized Panels - (Frame, Stones & Perforated Aluminum) - 11th to 16th floor | 25d | 2015-10-08 | 2015-11-05 | C-F-NG4-81, C-F-NG4-51 | 78d | 0d | 393,637.72 |
|  | 4 | **17th Floor to 22nd Floor** |  | 2015-10-08 | 2015-12-05 |  |  |  |  |
| C-F-NG4-121 |  | Installation of Aluminum Frames & Sub-Frames - 17th to 22nd floor | 25d | 2015-10-08 | 2015-11-05 | C-F-NG4-81 | 78d | 0d | 131,212.57 |
| C-F-NG4-131 |  | Installation of Customized Panels - (Frame, Stones & Perforated Aluminum) - 17th to 22nd floor | 25d | 2015-11-07 | 2015-12-05 | C-F-NG4-121, C-F-NG4-91 | 78d | 0d | 393,637.72 |
|  | 5 | **23rd Floor to 29th Floor** |  | 2015-11-07 | 2016-01-04 |  |  |  |  |
| C-F-NG4-161 |  | Installation of Aluminum Frames & Sub-Frames - 23rd to 29th floor | 25d | 2015-11-07 | 2015-12-05 | C-F-NG4-121 | 78d | 0d | 131,212.57 |
| C-F-NG4-171 |  | Installation of Customized Panels - (Frame, Stones & Perforated Aluminum) - 23rd to 29th floor | 25d | 2015-12-06 | 2016-01-04 | C-F-NG4-161, C-F-NG4-131 | 78d | 73d | 393,637.72 |
|  | 6 | **30th Floor ro 36th Floor** |  | 2016-03-02 | 2016-04-28 |  |  |  |  |
| C-F-NG4-201 |  | Installation of Aluminum Frames & Sub-Frames - 30th to 36th floor | 25d | 2016-03-02 | 2016-03-30 | C-F-NG4-161, C-SS-SP-384, C-SP-MRP-021, C-MEP-PD-2905 FF | 5d | 0d | 131,212.57 |
| C-F-NG4-191 |  | Installation of Customized Panels - (Frame, Stones & Perforated Aluminum) - 30th to 36th floor | 25d | 2016-03-31 | 2016-04-28 | C-F-NG4-171, C-F-NG4-201 | 5d | 0d | 393,637.72 |
|  | 7 | **37th Floor to 43rd Floor** |  | 2016-03-31 | 2016-05-28 |  |  |  |  |
| C-F-NG4-241 |  | Installation of Aluminum Frames & Sub-Frames - 37th to 43rd floor | 25d | 2016-03-31 | 2016-04-28 | C-F-NG4-201 | 5d | 0d | 131,212.57 |
| C-F-NG4-251 |  | Installation of Customized Panels - (Frame, Stones & Perforated Aluminum) - 37th to 43rd floor | 25d | 2016-04-30 | 2016-05-28 | C-F-NG4-241, C-F-NG4-191 | 5d | 0d | 393,637.72 |
|  | 8 | **44th Floor to Upper roof level** |  | 2016-04-30 | 2016-06-26 |  |  |  |  |
| C-F-NG4-271 |  | Installation of Aluminum Frames & Sub-Frames - 44th to upper roof | 25d | 2016-04-30 | 2016-05-28 | C-F-NG4-241, C-SS-RCS-414 FF+10d | 5d | 0d | 131,212.57 |
| C-F-NG4-281 |  | Installation of Customized Panels - (Frame, Stones & Perforated Aluminum) - 44th to upper roof | 25d | 2016-05-29 | 2016-06-26 | C-F-NG4-251, C-F-NG4-271 | 5d |  | 393,637.72 |

Notes:
- C-F-NG4-011: Expenses: NFS 34162.3; NCS 82766.6; NAS 14283.7
- C-F-NG4-21: Expenses: NFP 102487; NCP 248300; NAP 42851.2
- C-F-NG4-41: Expenses: NFS 34162.3; NCS 82766.6; NAS 14283.7
- C-F-NG4-51: Expenses: NFP 102487; NCP 248300; NAP 42851.2
- C-F-NG4-81: Expenses: NFS 34162.3; NCS 82766.6; NAS 14283.7
- C-F-NG4-91: Expenses: NFP 102487; NCP 248300; NAP 42851.2
- C-F-NG4-121: Expenses: NFS 34162.3; NCS 82766.6; NAS 14283.7
- C-F-NG4-131: Expenses: NFP 102487; NCP 248300; NAP 42851.2
- C-F-NG4-161: Expenses: NFS 34162.3; NCS 82766.6; MAS 14283.7
- C-F-NG4-171: Expenses: NFP 102487; NCP 248300; NAP 42851.2
- C-F-NG4-201: Expenses: NFS 34162.3; NCS 82766.6; NAS 14283.7
- C-F-NG4-191: Expenses: NFP 102487; NCP 248300; NAP 42851.2
- C-F-NG4-241: Expenses: NFS 34162.3; NCS 82766.6; NAS 14283.7
- C-F-NG4-251: Expenses: NFP 102487; NCP 248300; NAP 42851.2
- C-F-NG4-271: Expenses: NFS 34162.3; NCS 82766.6; NAS 14283.7
- C-F-NG4-281: Expenses: NFP 102487; NCP 248300; NAP 42851.2

| ID | WBS | Activity | Duration | Start | Finish | Predecessors | Total float | Free float | Cost |
| --- | --- | --- | --- | --- | --- | --- | --- | --- | --- |
|  | 3 | **East Elevation** |  | 2015-07-20 | 2016-06-26 |  |  |  |  |
|  | 1 | **Ground to 4th Floor** |  | 2015-07-20 | 2015-09-15 |  |  |  |  |
| C-F-NG4-291 |  | Installation of Aluminum Frames & Sub-Frames - Ground to 4th level | 25d | 2015-07-20 | 2015-08-17 | C-F-UP-1, C-SS-EC-154, C-SS-CS-194 | 69d | 0d | 73,807.07 |
| C-F-NG4-301 |  | Installation of Customized Panels - (Frame, Stones & Perforated Aluminum) - Ground to 4th level | 25d | 2015-08-18 | 2015-09-15 | C-F-NG4-291 | 69d | 0d | 221,421.22 |
|  | 2 | **5th Floor to 10th Floor** |  | 2015-08-18 | 2015-10-18 |  |  |  |  |
| C-F-NG4-311 |  | Installation of Aluminum Frames & Sub-Frames - 5th to 10th Floor | 25d | 2015-08-18 | 2015-09-15 | C-F-NG4-291 | 69d | 0d | 73,807.07 |
| C-F-NG4-321 |  | Installation of Customized Panels - (Frame, Stones & Perforated Aluminum) - 5th to 10th Floor | 25d | 2015-09-16 | 2015-10-18 | C-F-NG4-311, C-F-NG4-301 | 69d | 0d | 221,421.22 |
|  | 3 | **11th Floor to 16th Floor** |  | 2015-09-16 | 2015-11-16 |  |  |  |  |
| C-F-NG4-331 |  | Installation of Aluminum Frames & Sub-Frames - 11th to 16th floor | 25d | 2015-09-16 | 2015-10-18 | C-F-NG4-311, C-SS-CS-534 | 69d | 0d | 73,807.07 |
| C-F-NG4-341 |  | Installation of Customized Panels - (Frame, Stones & Perforated Aluminum) - 11th to 16th floor | 25d | 2015-10-19 | 2015-11-16 | C-F-NG4-331, C-F-NG4-321 | 69d | 0d | 221,421.22 |
|  | 4 | **17th Floor to 22nd Floor** |  | 2015-10-19 | 2015-12-15 |  |  |  |  |
| C-F-NG4-351 |  | Installation of Aluminum Frames & Sub-Frames - 17th to 22nd floor | 25d | 2015-10-19 | 2015-11-16 | C-F-NG4-331, C-SS-CS-544 | 69d | 0d | 73,807.07 |
| C-F-NG4-361 |  | Installation of Customized Panels - (Frame, Stones & Perforated Aluminum) - 17th to 22nd floor | 25d | 2015-11-17 | 2015-12-15 | C-F-NG4-351, C-F-NG4-341 | 69d | 15d | 221,421.22 |
|  | 5 | **23rd Floor to 29th Floor** |  | 2015-12-05 | 2016-02-01 |  |  |  |  |
| C-F-NG4-371 |  | Installation of Aluminum Frames & Sub-Frames - 23rd to 29th floor | 25d | 2015-12-05 | 2016-01-03 | C-F-NG4-351, C-SS-CS-554 | 54d | 0d | 73,807.07 |
| C-F-NG4-381 |  | Installation of Customized Panels - (Frame, Stones & Perforated Aluminum) - 23rd to 29th floor | 25d | 2016-01-04 | 2016-02-01 | C-F-NG4-371, C-F-NG4-361 | 54d | 14d | 221,421.22 |
|  | 6 | **30th Floor ro 36th Floor** |  | 2016-01-20 | 2016-03-19 |  |  |  |  |
| C-F-NG4-401 |  | Installation of Aluminum Frames & Sub-Frames - 30th to 36th floor | 25d | 2016-01-20 | 2016-02-18 | C-F-NG4-371, C-SS-CS-564 | 40d | 0d | 73,807.07 |
| C-F-NG4-391 |  | Installation of Customized Panels - (Frame, Stones & Perforated Aluminum) - 30th to 36th floor | 25d | 2016-02-20 | 2016-03-19 | C-F-NG4-381, C-F-NG4-401 | 40d | 23d | 221,421.22 |
|  | 7 | **37th Floor to 43rd Floor** |  | 2016-03-17 | 2016-05-14 |  |  |  |  |
| C-F-NG4-411 |  | Installation of Aluminum Frames & Sub-Frames - 37th to 43rd floor | 25d | 2016-03-17 | 2016-04-14 | C-F-NG4-401, C-SS-CS-574 | 17d | 0d | 73,807.07 |
| C-F-NG4-421 |  | Installation of Customized Panels - (Frame, Stones & Perforated Aluminum) - 37th to 43rd floor | 25d | 2016-04-16 | 2016-05-14 | C-F-NG4-411, C-F-NG4-391 | 17d | 12d | 221,421.22 |
|  | 8 | **44th Floor to Upper roof level** |  | 2016-04-30 | 2016-06-26 |  |  |  |  |
| C-F-NG4-431 |  | Installation of Aluminum Frames & Sub-Frames - 44th to upper roof | 25d | 2016-04-30 | 2016-05-28 | C-F-NG4-411, C-SS-RCS-414 FF+10d, C-SS-CS-584 | 5d | 0d | 73,807.07 |
| C-F-NG4-441 |  | Installation of Customized Panels - (Frame, Stones & Perforated Aluminum) - 44th to upper roof | 25d | 2016-05-29 | 2016-06-26 | C-F-NG4-421, C-F-NG4-431 | 5d | 0d | 221,421.22 |

Notes:
- C-F-NG4-291: Expenses: EFS 19216.3; ECS 46556.2; EAS 8034.6
- C-F-NG4-301: Expenses: EFP 57648.9; ECP 139669; EAP 24103.8
- C-F-NG4-311: Expenses: EFS 19216.3; ECS 46556.2; EAS 8034.6
- C-F-NG4-321: Expenses: EFP 57648.9; ECP 139669; EAP 24103.8
- C-F-NG4-331: Expenses: EFS 19216.3; ECS 46556.2; EAS 8034.6
- C-F-NG4-341: Expenses: EFP 57648.9; ECP 139669; EAP 24103.8
- C-F-NG4-351: Expenses: EFS 19216.3; ECS 46556.2; EAS 8034.6
- C-F-NG4-361: Expenses: EFP 57648.9; ECP 139669; EAP 24103.8
- C-F-NG4-371: Expenses: EFS 19216.3; ECS 46556.2; EAS 8034.6
- C-F-NG4-381: Expenses: EFP 57648.9; ECP 139669; EAP 24103.8
- C-F-NG4-401: Expenses: EFS 19216.3; ECS 46556.2; EAS 8034.6
- C-F-NG4-391: Expenses: EFP 57648.9; ECP 139669; EAP 24103.8
- C-F-NG4-411: Expenses: EFS 19216.3; ECS 46556.2; EAS 8034.6
- C-F-NG4-421: Expenses: EFP 57648.9; ECP 139669; EAP 24103.8
- C-F-NG4-431: Expenses: EFS 19216.3; ECS 46556.2; EAS 8034.6
- C-F-NG4-441: Expenses: EFP 57648.9; ECP 139669; EAP 24103.8

| ID | WBS | Activity | Duration | Start | Finish | Predecessors | Total float | Free float | Cost |
| --- | --- | --- | --- | --- | --- | --- | --- | --- | --- |
|  | 2 | **South Elevation** |  | 2015-08-11 | 2016-06-23 |  |  |  |  |
|  | 1 | **Ground to 4th Floor** |  | 2015-08-11 | 2015-10-11 |  |  |  |  |
| C-F-NG4-451 |  | Installation of Aluminum Frames & Sub-Frames - Ground to 4th level | 25d | 2015-08-11 | 2015-09-08 | C-F-UP-11, C-SS-ML-334 | 50d | 0d | 131,212.57 |
| C-F-NG4-461 |  | Installation of Customized Panels - (Frame, Stones & Perforated Aluminum) - Ground to 4th level | 25d | 2015-09-09 | 2015-10-11 | C-F-NG4-451, C-LH-L-565 FF | 50d | 0d | 393,637.72 |
|  | 2 | **5th Floor to 10th Floor** |  | 2015-09-09 | 2015-11-09 |  |  |  |  |
| C-F-NG4-471 |  | Installation of Aluminum Frames & Sub-Frames - 5th to 10th Floor | 25d | 2015-09-09 | 2015-10-11 | C-F-NG4-451 | 50d | 0d | 131,212.57 |
| C-F-NG4-481 |  | Installation of Customized Panels - (Frame, Stones & Perforated Aluminum) - 5th to 10th Floor | 25d | 2015-10-12 | 2015-11-09 | C-F-NG4-471, C-F-NG4-461, C-LH-L-575 FF | 50d | 0d | 393,637.72 |
|  | 3 | **11th Floor to 16th Floor** |  | 2015-10-12 | 2015-12-08 |  |  |  |  |
| C-F-NG4-491 |  | Installation of Aluminum Frames & Sub-Frames - 11th to 16th floor | 25d | 2015-10-12 | 2015-11-09 | C-F-NG4-471 | 50d | 0d | 131,212.57 |
| C-F-NG4-501 |  | Installation of Customized Panels - (Frame, Stones & Perforated Aluminum) - 11th to 16th floor | 25d | 2015-11-10 | 2015-12-08 | C-F-NG4-491, C-F-NG4-481, C-LH-L-585 FF | 50d | 0d | 393,637.72 |
|  | 4 | **17th Floor to 22nd Floor** |  | 2015-11-10 | 2016-01-07 |  |  |  |  |
| C-F-NG4-511 |  | Installation of Aluminum Frames & Sub-Frames - 17th to 22nd floor | 25d | 2015-11-10 | 2015-12-08 | C-F-NG4-491 | 50d | 0d | 131,212.57 |
| C-F-NG4-521 |  | Installation of Customized Panels - (Frame, Stones & Perforated Aluminum) - 17th to 22nd floor | 25d | 2015-12-09 | 2016-01-07 | C-F-NG4-511, C-F-NG4-501 | 50d | 0d | 393,637.72 |
|  | 5 | **23rd Floor to 29th Floor** |  | 2015-12-09 | 2016-02-06 |  |  |  |  |
| C-F-NG4-531 |  | Installation of Aluminum Frames & Sub-Frames - 23rd to 29th floor | 25d | 2015-12-09 | 2016-01-07 | C-F-NG4-511 | 50d | 0d | 131,212.57 |
| C-F-NG4-541 |  | Installation of Customized Panels - (Frame, Stones & Perforated Aluminum) - 23rd to 29th floor | 25d | 2016-01-09 | 2016-02-06 | C-F-NG4-531, C-F-NG4-521 | 50d | 0d | 393,637.72 |
|  | 6 | **30th Floor ro 36th Floor** |  | 2016-01-09 | 2016-03-07 |  |  |  |  |
| C-F-NG4-561 |  | Installation of Aluminum Frames & Sub-Frames - 30th to 36th floor | 25d | 2016-01-09 | 2016-02-06 | C-F-NG4-531 | 50d | 0d | 131,212.57 |
| C-F-NG4-551 |  | Installation of Customized Panels - (Frame, Stones & Perforated Aluminum) - 30th to 36th floor | 25d | 2016-02-07 | 2016-03-07 | C-F-NG4-541, C-F-NG4-561 | 50d | 0d | 393,637.72 |
|  | 7 | **37th Floor to 43rd Floor** |  | 2016-02-07 | 2016-04-05 |  |  |  |  |
| C-F-NG4-571 |  | Installation of Aluminum Frames & Sub-Frames - 37th to 43rd floor | 25d | 2016-02-07 | 2016-03-07 | C-F-NG4-561 | 50d | 0d | 131,212.57 |
| C-F-NG4-581 |  | Installation of Customized Panels - (Frame, Stones & Perforated Aluminum) - 37th to 43rd floor | 25d | 2016-03-08 | 2016-04-05 | C-F-NG4-571, C-F-NG4-551 | 50d | 43d | 393,637.72 |
|  | 8 | **44th Floor to Upper roof level** |  | 2016-04-27 | 2016-06-23 |  |  |  |  |
| C-F-NG4-591 |  | Installation of Aluminum Frames & Sub-Frames - 44th to upper roof | 25d | 2016-04-27 | 2016-05-25 | C-F-NG4-571, C-SS-RCS-414 FF+10d | 7d | 0d | 131,212.57 |
| C-F-NG4-601 |  | Installation of Customized Panels - (Frame, Stones & Perforated Aluminum) - 44th to upper roof | 25d | 2016-05-26 | 2016-06-23 | C-F-NG4-581, C-F-NG4-591 | 7d |  | 393,637.72 |

Notes:
- C-F-NG4-451: Expenses: SFS 34162.3; SCS 82766.6; SAS 14283.7
- C-F-NG4-461: Expenses: SFP 102487; SCP 248300; SAP 42851.2
- C-F-NG4-471: Expenses: SFS 34162.3; SCS 82766.6; SAS 14283.7
- C-F-NG4-481: Expenses: SFP 102487; SCP 248300; SAP 42851.2
- C-F-NG4-491: Expenses: SFS 34162.3; SCS 82766.6; SAS 14283.7
- C-F-NG4-501: Expenses: SFP 102487; SCP 248300; SAP 42851.2
- C-F-NG4-511: Expenses: SFS 34162.3; SCS 82766.6; SAS 14283.7
- C-F-NG4-521: Expenses: SFP 102487; SCP 248300; SAP 42851.2
- C-F-NG4-531: Expenses: SFS 34162.3; SCS 82766.6; SAS 14283.7
- C-F-NG4-541: Expenses: SFP 102487; SCP 248300; SAP 42851.2
- C-F-NG4-561: Expenses: SFS 34162.3; SCS 82766.6; SAS 14283.7
- C-F-NG4-551: Expenses: SFP 102487; SCP 248300; SAP 42851.2
- C-F-NG4-571: Expenses: SFS 34162.3; SCS 82766.6; SAS 14283.7
- C-F-NG4-581: Expenses: SFP 102487; SCP 248300; SAP 42851.2
- C-F-NG4-591: Expenses: SFS 34162.3; SCS 82766.6; SAS 14283.7
- C-F-NG4-601: Expenses: SFP 102487; SCP 248300; SAP 42851.2

| ID | WBS | Activity | Duration | Start | Finish | Predecessors | Total float | Free float | Cost |
| --- | --- | --- | --- | --- | --- | --- | --- | --- | --- |
|  | 4 | **West Elevation** |  | 2015-09-06 | 2016-06-26 |  |  |  |  |
|  | 1 | **Ground to 4th Floor** |  | 2015-09-06 | 2015-11-05 |  |  |  |  |
| C-F-NG4-611 |  | Installation of Aluminum Frames & Sub-Frames - Ground to 4th level | 25d | 2015-09-06 | 2015-10-07 | C-F-UP-21, C-SS-FD-284, C-SS-CS-W-204 | 28d | 0d | 73,807.07 |
| C-F-NG4-621 |  | Installation of Customized Panels - (Frame, Stones & Perforated Aluminum) - Ground to 4th level | 25d | 2015-10-08 | 2015-11-05 | C-F-NG4-611, C-F-E-LF-001 FF | 28d | 0d | 221,421.22 |
|  | 2 | **5th Floor to 10th Floor** |  | 2015-10-08 | 2015-12-05 |  |  |  |  |
| C-F-NG4-631 |  | Installation of Aluminum Frames & Sub-Frames - 5th to 10th Floor | 25d | 2015-10-08 | 2015-11-05 | C-F-NG4-611 | 28d | 0d | 73,807.07 |
| C-F-NG4-641 |  | Installation of Customized Panels - (Frame, Stones & Perforated Aluminum) - 5th to 10th Floor | 25d | 2015-11-07 | 2015-12-05 | C-F-NG4-631, C-F-NG4-621, C-F-E-LF-1 FF | 28d | 0d | 221,421.22 |
|  | 3 | **11th Floor to 16th Floor** |  | 2015-11-07 | 2016-01-04 |  |  |  |  |
| C-F-NG4-651 |  | Installation of Aluminum Frames & Sub-Frames - 11th to 16th floor | 25d | 2015-11-07 | 2015-12-05 | C-F-NG4-631, C-SS-CS-W-474 | 28d | 0d | 73,807.07 |
| C-F-NG4-661 |  | Installation of Customized Panels - (Frame, Stones & Perforated Aluminum) - 11th to 16th floor | 25d | 2015-12-06 | 2016-01-04 | C-F-NG4-651, C-F-NG4-641, C-F-E-LF-11 FF | 28d | 0d | 221,421.22 |
|  | 4 | **17th Floor to 22nd Floor** |  | 2015-12-06 | 2016-02-02 |  |  |  |  |
| C-F-NG4-671 |  | Installation of Aluminum Frames & Sub-Frames - 17th to 22nd floor | 25d | 2015-12-06 | 2016-01-04 | C-F-NG4-651, C-SS-CS-W-484 | 28d | 0d | 73,807.07 |
| C-F-NG4-681 |  | Installation of Customized Panels - (Frame, Stones & Perforated Aluminum) - 17th to 22nd floor | 25d | 2016-01-05 | 2016-02-02 | C-F-NG4-671, C-F-NG4-661, C-LH-L-595 FF, C-F-E-LF-21 FF | 28d | 0d | 221,421.22 |
|  | 5 | **23rd Floor to 29th Floor** |  | 2016-01-05 | 2016-03-03 |  |  |  |  |
| C-F-NG4-691 |  | Installation of Aluminum Frames & Sub-Frames - 23rd to 29th floor | 25d | 2016-01-05 | 2016-02-02 | C-F-NG4-671, C-SS-CS-W-494 | 28d | 0d | 73,807.07 |
| C-F-NG4-701 |  | Installation of Customized Panels - (Frame, Stones & Perforated Aluminum) - 23rd to 29th floor | 25d | 2016-02-03 | 2016-03-03 | C-F-NG4-691, C-F-NG4-681, C-LH-L-605 FF, C-F-E-LF-31 FF | 28d | 0d | 221,421.22 |
|  | 6 | **30th Floor ro 36th Floor** |  | 2016-02-03 | 2016-04-02 |  |  |  |  |
| C-F-NG4-721 |  | Installation of Aluminum Frames & Sub-Frames - 30th to 36th floor | 25d | 2016-02-03 | 2016-03-03 | C-F-NG4-691, C-SS-CS-W-504 | 28d | 0d | 73,807.07 |
| C-F-NG4-711 |  | Installation of Customized Panels - (Frame, Stones & Perforated Aluminum) - 30th to 36th floor | 25d | 2016-03-05 | 2016-04-02 | C-F-NG4-701, C-F-NG4-721, C-LH-L-615 FF, C-F-E-LF-41 FF | 28d | 11d | 221,421.22 |
|  | 7 | **37th Floor to 43rd Floor** |  | 2016-03-17 | 2016-05-14 |  |  |  |  |
| C-F-NG4-731 |  | Installation of Aluminum Frames & Sub-Frames - 37th to 43rd floor | 25d | 2016-03-17 | 2016-04-14 | C-F-NG4-721, C-SS-CS-W-514 | 17d | 0d | 73,807.07 |
| C-F-NG4-741 |  | Installation of Customized Panels - (Frame, Stones & Perforated Aluminum) - 37th to 43rd floor | 25d | 2016-04-16 | 2016-05-14 | C-F-NG4-731, C-F-NG4-711, C-LH-L-625 FF, C-F-E-LF-51 FF | 17d | 12d | 221,421.22 |
|  | 8 | **44th Floor to Upper roof level** |  | 2016-04-30 | 2016-06-26 |  |  |  |  |
| C-F-NG4-751 |  | Installation of Aluminum Frames & Sub-Frames - 44th to upper roof | 25d | 2016-04-30 | 2016-05-28 | C-F-NG4-731, C-SS-RCS-414 FF+10d, C-SS-CS-W-524 | 5d | 0d | 73,807.07 |
| C-F-NG4-761 |  | Installation of Customized Panels - (Frame, Stones & Perforated Aluminum) - 44th to upper roof | 25d | 2016-05-29 | 2016-06-26 | C-F-NG4-741, C-F-NG4-751, C-LH-L-635 FF, C-F-E-LF-61 FF | 5d | 0d | 221,421.22 |

Notes:
- C-F-NG4-611: Expenses: WFS 19216.3; WCS 46556.2; WAS 8034.6
- C-F-NG4-621: Expenses: WFP 57648.9; WCP 139669; WAP 24103.8
- C-F-NG4-631: Expenses: WFS 19216.3; WCS 46556.2; WAS 8034.6
- C-F-NG4-641: Expenses: WFP 57648.9; WCP 139669; WAP 24103.8
- C-F-NG4-651: Expenses: WFS 19216.3; WCS 46556.2; WAS 8034.6
- C-F-NG4-661: Expenses: WFP 57648.9; WCP 139669; WAP 24103.8
- C-F-NG4-671: Expenses: WFS 19216.3; WCS 46556.2; WAS 8034.6
- C-F-NG4-681: Expenses: WFP 57648.9; WCP 139669; WAP 24103.8
- C-F-NG4-691: Expenses: WFS 19216.3; WCS 46556.2; WAS 8034.6
- C-F-NG4-701: Expenses: WFP 57648.9; WCP 139669; WAP 24103.8
- C-F-NG4-721: Expenses: WFS 19216.3; WCS 46556.2; WAS 8034.6
- C-F-NG4-711: Expenses: WFP 57648.9; WCP 139669; WAP 24103.8
- C-F-NG4-731: Expenses: WFS 19216.3; WCS 46556.2; WAS 8034.6
- C-F-NG4-741: Expenses: WFP 57648.9; WCP 139669; WAP 24103.8
- C-F-NG4-751: Expenses: WFS 19216.3; WCS 46556.2; WAS 8034.6
- C-F-NG4-761: Expenses: WFP 57648.9; WCP 139669; WAP 24103.8

| ID | WBS | Activity | Duration | Start | Finish | Predecessors | Total float | Free float | Cost |
| --- | --- | --- | --- | --- | --- | --- | --- | --- | --- |
|  | 1 | **Unitized Panels - Customized At the area of hoists & Tower Crane Bracket** |  | 2016-09-15 | 2017-04-16 |  |  |  |  |
|  | 3 | **East Elevation** |  | 2016-09-15 | 2017-04-16 |  |  |  |  |
|  | 1 | **Ground to 4th Floor** |  | 2016-09-15 | 2016-11-01 |  |  |  |  |
| C-F-NG4-931 |  | Installation of Aluminum Frames & Sub-Frames - Ground to 4th Floor - Hoist Area | 20d | 2016-09-15 | 2016-10-09 | M-ME-81, M-ME-21 | 11d | 0d | 51,254.91 |
| C-F-NG4-941 |  | Installation of Customized Panels - (Frame, Stones & Perforated Aluminum) - Ground to 4th Floor - Hoist Area | 20d | 2016-10-10 | 2016-11-01 | C-F-NG4-931, P-MEP-E-4883 | 11d | 0d | 153,764.74 |
|  | 2 | **5th Floor to 10th Floor** |  | 2016-10-10 | 2016-11-24 |  |  |  |  |
| C-F-NG4-951 |  | Installation of Aluminum Frames & Sub-Frames - 5th to 10th Floor - Hoist Area | 20d | 2016-10-10 | 2016-11-01 | C-F-NG4-931 | 63d | 0d | 51,254.91 |
| C-F-NG4-961 |  | Installation of Customized Panels - (Frame, Stones & Perforated Aluminum) - 5th to 10th Floor - Hoist Area | 20d | 2016-11-02 | 2016-11-24 | C-F-NG4-951, C-F-NG4-941 | 63d | 0d | 153,764.74 |
|  | 3 | **11th Floor to 16th Floor** |  | 2016-11-02 | 2016-12-19 |  |  |  |  |
| C-F-NG4-971 |  | Installation of Aluminum Frames & Sub-Frames - 11th to 16th floor - Hoist Area | 20d | 2016-11-02 | 2016-11-24 | C-F-NG4-951 | 63d | 0d | 51,254.91 |
| C-F-NG4-981 |  | Installation of Customized Panels - (Frame, Stones & Perforated Aluminum) - 11th to 16th floor - Hoist Area | 20d | 2016-11-26 | 2016-12-19 | C-F-NG4-971, C-F-NG4-961 | 63d | 0d | 153,764.74 |
|  | 4 | **17th Floor to 22nd Floor** |  | 2016-11-26 | 2017-01-11 |  |  |  |  |
| C-F-NG4-991 |  | Installation of Aluminum Frames & Sub-Frames - 17th to 22nd floor - Hoist Area | 20d | 2016-11-26 | 2016-12-19 | C-F-NG4-971 | 63d | 0d | 51,254.91 |
| C-F-NG4-1001 |  | Installation of Customized Panels - (Frame, Stones & Perforated Aluminum) - 17th to 22nd floor - Hoist Area | 20d | 2016-12-20 | 2017-01-11 | C-F-NG4-991, C-F-NG4-981 | 63d | 0d | 153,764.74 |
|  | 5 | **23rd Floor to 29th Floor** |  | 2016-12-20 | 2017-02-04 |  |  |  |  |
| C-F-NG4-1011 |  | Installation of Aluminum Frames & Sub-Frames - 23rd to 29th floor - Hoist Area | 20d | 2016-12-20 | 2017-01-11 | C-F-NG4-991 | 63d | 0d | 51,254.91 |
| C-F-NG4-1021 |  | Installation of Customized Panels - (Frame, Stones & Perforated Aluminum) - 23rd to 29th floor - Hoist Area | 20d | 2017-01-12 | 2017-02-04 | C-F-NG4-1011, C-F-NG4-1001 | 63d | 0d | 153,764.74 |
|  | 6 | **30th Floor ro 36th Floor** |  | 2017-01-12 | 2017-02-28 |  |  |  |  |
| C-F-NG4-1041 |  | Installation of Aluminum Frames & Sub-Frames - 30th to 36th floor - Hoist Area | 20d | 2017-01-12 | 2017-02-04 | C-F-NG4-1011 | 63d | 0d | 51,254.91 |
| C-F-NG4-1031 |  | Installation of Customized Panels - (Frame, Stones & Perforated Aluminum) - 30th to 36th floor - Hoist Area | 20d | 2017-02-05 | 2017-02-28 | C-F-NG4-1021, C-F-NG4-1041 | 63d | 0d | 153,764.74 |
|  | 7 | **37th Floor to 43rd Floor** |  | 2017-02-05 | 2017-03-23 |  |  |  |  |
| C-F-NG4-1051 |  | Installation of Aluminum Frames & Sub-Frames - 37th to 43rd floor - Hoist Area | 20d | 2017-02-05 | 2017-02-28 | C-F-NG4-1041 | 63d | 0d | 51,254.91 |
| C-F-NG4-1061 |  | Installation of Customized Panels - (Frame, Stones & Perforated Aluminum) - 37th to 43rd floor - Hoist Area | 20d | 2017-03-01 | 2017-03-23 | C-F-NG4-1051, C-F-NG4-1031 | 63d | 0d | 153,764.74 |
|  | 8 | **44th Floor to Upper roof level** |  | 2017-03-01 | 2017-04-16 |  |  |  |  |
| C-F-NG4-1071 |  | Installation of Aluminum Frames & Sub-Frames - 44th to upper roof - Hoist Area | 20d | 2017-03-01 | 2017-03-23 | C-F-NG4-1051 | 63d | 0d | 51,254.91 |
| C-F-NG4-1081 |  | Installation of Customized Panels - (Frame, Stones & Perforated Aluminum) - 44th to upper roof - Hoist Area | 20d | 2017-03-25 | 2017-04-16 | C-F-NG4-1061, C-F-NG4-1071 | 63d |  | 153,764.74 |

Notes:
- C-F-NG4-931: Expenses: S 13344.6; CS 32330.7; AS 5579.58
- C-F-NG4-941: Expenses: P 40033.9; CP 96992.1; AP 16738.7
- C-F-NG4-951: Expenses: S 13344.6; CS 32330.7; AS 5579.58
- C-F-NG4-961: Expenses: P 40033.9; CP 96992.1; AP 16738.7
- C-F-NG4-971: Expenses: S 13344.6; CS 32330.7; AS 5579.58
- C-F-NG4-981: Expenses: P 40033.9; CP 96992.1; AP 16738.7
- C-F-NG4-991: Expenses: S 13344.6; CS 32330.7; AS 5579.58
- C-F-NG4-1001: Expenses: P 40033.9; CP 96992.1; AP 16738.7
- C-F-NG4-1011: Expenses: S 13344.6; CS 32330.7; AS 5579.58
- C-F-NG4-1021: Expenses: P 40033.9; CP 96992.1; AP 16738.7
- C-F-NG4-1041: Expenses: S 13344.6; CS 32330.7; AS 5579.58
- C-F-NG4-1031: Expenses: P 40033.9; CP 96992.1; AP 16738.7
- C-F-NG4-1051: Expenses: S 13344.6; CS 32330.7; AS 5579.58
- C-F-NG4-1061: Expenses: P 40033.9; CP 96992.1; AP 16738.7
- C-F-NG4-1071: Expenses: S 13344.6; CS 32330.7; AS 5579.58
- C-F-NG4-1081: Expenses: P 40033.9; CP 96992.1; AP 16738.7

| ID | WBS | Activity | Duration | Start | Finish | Predecessors | Total float | Free float | Cost |
| --- | --- | --- | --- | --- | --- | --- | --- | --- | --- |
|  | 4 | **West Elevation** |  | 2016-09-25 | 2017-04-08 |  |  |  |  |
|  | 1 | **Ground to 4th Floor** |  | 2016-09-25 | 2016-10-08 |  |  |  |  |
| C-F-NG4-1251 |  | Installation of Aluminum Frames & Sub-Frames - Ground to 4th Level - Hoist Area | 6d | 2016-09-25 | 2016-10-01 | M-ME-31, M-ME-71 | 18d | 0d | 51,254.91 |
| C-F-NG4-1261 |  | Installation of Customized Panels - (Frame, Stones & Perforated Aluminum) - Ground to 4th Level - Hoist Area | 6d | 2016-10-02 | 2016-10-08 | C-F-NG4-1251 | 18d | 7d | 153,764.74 |
|  | 2 | **5th Floor to 10th Floor** |  | 2016-10-02 | 2016-11-16 |  |  |  |  |
| C-F-NG4-1271 |  | Installation of Aluminum Frames & Sub-Frames - 5th to 10th Floor - Hoist Area | 20d | 2016-10-02 | 2016-10-24 | C-F-NG4-1251 | 70d | 0d | 51,254.91 |
| C-F-NG4-1281 |  | Installation of Customized Panels - (Frame, Stones & Perforated Aluminum) - 5th to 10th Floor - Hoist Area | 20d | 2016-10-25 | 2016-11-16 | C-F-NG4-1271, C-F-NG4-1261 | 70d | 0d | 153,764.74 |
|  | 3 | **11th Floor to 16th Floor** |  | 2016-10-25 | 2016-12-10 |  |  |  |  |
| C-F-NG4-1291 |  | Installation of Aluminum Frames & Sub-Frames - 11th to 16th floor - Hoist Area | 20d | 2016-10-25 | 2016-11-16 | C-F-NG4-1271 | 70d | 0d | 51,254.91 |
| C-F-NG4-1301 |  | Installation of Customized Panels - (Frame, Stones & Perforated Aluminum) - 11th to 16th floor - Hoist Area | 20d | 2016-11-17 | 2016-12-10 | C-F-NG4-1291, C-F-NG4-1281 | 70d | 0d | 153,764.74 |
|  | 4 | **17th Floor to 22nd Floor** |  | 2016-11-17 | 2017-01-03 |  |  |  |  |
| C-F-NG4-1311 |  | Installation of Aluminum Frames & Sub-Frames - 17th to 22nd floor - Hoist Area | 20d | 2016-11-17 | 2016-12-10 | C-F-NG4-1291 | 70d | 0d | 51,254.91 |
| C-F-NG4-1321 |  | Installation of Customized Panels - (Frame, Stones & Perforated Aluminum) - 17th to 22nd floor - Hoist Area | 20d | 2016-12-11 | 2017-01-03 | C-F-NG4-1311, C-F-NG4-1301 | 70d | 0d | 153,764.74 |
|  | 5 | **23rd Floor to 29th Floor** |  | 2016-12-11 | 2017-01-26 |  |  |  |  |
| C-F-NG4-1331 |  | Installation of Aluminum Frames & Sub-Frames - 23rd to 29th floor - Hoist Area | 20d | 2016-12-11 | 2017-01-03 | C-F-NG4-1311 | 70d | 0d | 51,254.91 |
| C-F-NG4-1341 |  | Installation of Customized Panels - (Frame, Stones & Perforated Aluminum) - 23rd to 29th floor - Hoist Area | 20d | 2017-01-04 | 2017-01-26 | C-F-NG4-1331, C-F-NG4-1321 | 70d | 0d | 153,764.74 |
|  | 6 | **30th Floor ro 36th Floor** |  | 2017-01-04 | 2017-02-20 |  |  |  |  |
| C-F-NG4-1361 |  | Installation of Aluminum Frames & Sub-Frames - 30th to 36th floor - Hoist Area | 20d | 2017-01-04 | 2017-01-26 | C-F-NG4-1331 | 70d | 0d | 51,254.91 |
| C-F-NG4-1351 |  | Installation of Customized Panels - (Frame, Stones & Perforated Aluminum) - 30th to 36th floor - Hoist Area | 20d | 2017-01-28 | 2017-02-20 | C-F-NG4-1341, C-F-NG4-1361 | 70d | 0d | 153,764.74 |
|  | 7 | **37th Floor to 43rd Floor** |  | 2017-01-28 | 2017-03-15 |  |  |  |  |
| C-F-NG4-1371 |  | Installation of Aluminum Frames & Sub-Frames - 37th to 43rd floor - Hoist Area | 20d | 2017-01-28 | 2017-02-20 | C-F-NG4-1361 | 70d | 0d | 51,254.91 |
| C-F-NG4-1381 |  | Installation of Customized Panels - (Frame, Stones & Perforated Aluminum) - 37th to 43rd floor - Hoist Area | 20d | 2017-02-21 | 2017-03-15 | C-F-NG4-1371, C-F-NG4-1351 | 70d | 0d | 153,764.74 |
|  | 8 | **44th Floor to Upper roof level** |  | 2017-02-21 | 2017-04-08 |  |  |  |  |
| C-F-NG4-1391 |  | Installation of Aluminum Frames & Sub-Frames - 44th to upper roof - Hoist Area | 20d | 2017-02-21 | 2017-03-15 | C-F-NG4-1371 | 70d | 0d | 51,254.91 |
| C-F-NG4-1401 |  | Installation of Customized Panels - (Frame, Stones & Perforated Aluminum) - 44th to upper roof - Hoist Area | 20d | 2017-03-16 | 2017-04-08 | C-F-NG4-1381, C-F-NG4-1391 | 70d |  | 153,764.74 |

Notes:
- C-F-NG4-1251: Expenses: S 13344.6; CS 32330.7; AS 5579.58
- C-F-NG4-1261: Expenses: P 40033.9; CP 96992.1; AP 16738.7
- C-F-NG4-1271: Expenses: S 13344.6; CS 32330.7; AS 5579.58
- C-F-NG4-1281: Expenses: P 40033.9; CP 96992.1; AP 16738.7
- C-F-NG4-1291: Expenses: S 13344.6; CS 32330.7; AS 5579.58
- C-F-NG4-1301: Expenses: P 40033.9; CP 96992.1; AP 16738.7
- C-F-NG4-1311: Expenses: S 13344.6; CS 32330.7; AS 5579.58
- C-F-NG4-1321: Expenses: P 40033.9; CP 96992.1; AP 16738.7
- C-F-NG4-1331: Expenses: S 13344.6; CS 32330.7; AS 5579.58
- C-F-NG4-1341: Expenses: P 40033.9; CP 96992.1; AP 16738.7
- C-F-NG4-1361: Expenses: S 13344.6; CS 32330.7; AS 5579.58
- C-F-NG4-1351: Expenses: P 40033.9; CP 96992.1; AP 16738.7
- C-F-NG4-1371: Expenses: S 13344.6; CS 32330.7; AS 5579.58
- C-F-NG4-1381: Expenses: P 40033.9; CP 96992.1; AP 16738.7
- C-F-NG4-1391: Expenses: S 13344.6; CS 32330.7; AS 5579.58
- C-F-NG4-1401: Expenses: P 40033.9; CP 96992.1; AP 16738.7

| ID | WBS | Activity | Duration | Start | Finish | Predecessors | Total float | Free float | Calendar | Cost |
| --- | --- | --- | --- | --- | --- | --- | --- | --- | --- | --- |
|  | 2 | **Entrance Canopy - Glazing** |  | 2016-06-27 | 2016-08-29 |  |  |  |  |  |
| C-F-EC-001 |  | Installation of Stanless steel Tension Bar | 10d | 2016-06-27 | 2016-07-07 | C-SS-EC-154, C-F-NG4-441 | 95d | 0d | *APB - 6 D week + Qatar Holiday | 101,709.12 |
| C-F-EC-002 |  | Installation of Frame | 20d | 2016-07-09 | 2016-07-31 | C-F-EC-001 | 95d | 0d | *APB - 6 D week + Qatar Holiday | 101,709.12 |
| C-F-EC-003 |  | Installation of Dark Bronze Glass | 25d | 2016-08-01 | 2016-08-29 | C-F-EC-002 | 95d | 89d | *APB - 6 D week + Qatar Holiday | 474,642.57 |
|  | 3 | **Installation of Facade Lighting Fixtures** |  | 2015-07-02 | 2016-06-23 |  |  |  |  |  |
| C-F-E-LF-001 |  | Installation of Facade Lighting FIxtures from ground to 4th Floor | 25d | 2015-07-02 | 2015-08-02 | C-F-UP-001 SS+5d | 107d | 79d |  | 215,485.63 |
| C-F-E-LF-1 |  | Installation of Facade Lighting FIxtures from 5th to 10th Floor | 25d | 2015-09-12 | 2015-10-13 | C-F-UP-31 SS+5d | 73d | 45d |  | 215,485.63 |
| C-F-E-LF-11 |  | Installation of Facade Lighting FIxtures from 11th to 16th Floor | 25d | 2015-10-27 | 2015-11-24 | C-F-UP-71 SS+5d | 62d | 34d |  | 215,485.63 |
| C-F-E-LF-21 |  | Installation of Facade Lighting FIxtures from 17th to 22nd Floor | 25d | 2015-12-08 | 2016-01-06 | C-F-UP-111 SS+5d | 51d | 23d |  | 215,485.63 |
| C-F-E-LF-31 |  | Installation of Facade Lighting FIxtures from 23rd to 29th Floor | 25d | 2016-01-20 | 2016-02-18 | C-F-UP-151 SS+5d | 40d | 12d |  | 215,485.63 |
| C-F-E-LF-41 |  | Installation of Facade Lighting FIxtures from 30th to 36th Floor | 25d | 2016-03-03 | 2016-03-31 | C-F-UP-191 SS+5d | 29d | 1d |  | 215,485.63 |
| C-F-E-LF-51 |  | Installation of Facade Lighting FIxtures from 37th to 43rd Floor | 25d | 2016-04-14 | 2016-05-12 | C-F-UP-231 SS+5d | 18d | 1d |  | 215,485.63 |
| C-F-E-LF-61 |  | Installation of Facade Lighting FIxtures from 44th to Roof Floor | 25d | 2016-05-26 | 2016-06-23 | C-F-UP-271 SS+5d | 7d | 2d |  | 215,485.63 |
|  | 2 | **MEP** |  | 2014-11-25 | 2017-03-21 |  |  |  |  |  |
|  | 4 | **MEP Works - Basement** |  | 2014-11-25 | 2016-12-26 |  |  |  |  |  |
|  | 4 | **MEP works - Embedded services within Concrete** |  | 2014-11-25 | 2015-02-05 |  |  |  |  |  |
| C-MEP-Em-001 |  | Embeded MEP services within the Raft & Walls/Columns up to B2 | 14d | 2014-11-25 | 2014-12-10 | P-MEP-E-4643 SS, SD-CS-B3-252 SS, SD-CS-B3-232 SS | 5d | 2d |  | 83,787.23 |
| C-MEP-Em-012 |  | Embeded MEP services within Basement 2 & Walls/Columns up to B1 | 14d | 2014-12-28 | 2015-01-12 | C-CS-Su-A-B2-01 SS+2d, C-CS-Su-A-B2-02 SS+2d, SD-CS-B2-212 | 152d | 94d |  | 83,787.23 |
| C-MEP-Em-022 |  | Embeded MEP services within Basement 1 & Walls/Columns up to GF | 14d | 2015-01-04 | 2015-01-19 | C-CS-Su-A-B1-01 SS, C-CS-Su-A-B1-02 SS, PQ-CS-C-1212, SD-CS-B1-212 | 182d | 124d |  | 83,787.23 |
| C-MEP-Em-032 |  | Embeded MEP services within Ground FLoor & Walls/Columns up to MZ | 14d | 2015-01-21 | 2015-02-05 | C-CS-Su-A-GF-01 SS, C-CS-Su-A-GF-02 SS, SD-CS-GF-212 | 203d | 145d |  | 76,671.88 |
|  | 1 | **MEP Risers / Shafts** |  | 2015-10-01 | 2016-04-23 |  |  |  |  |  |
|  | 1 | **Basement to Ground** |  | 2015-10-01 | 2016-04-23 |  |  |  |  |  |
|  | 7 | **Electrical** |  | 2015-10-01 | 2015-12-31 |  |  |  |  |  |
| C-E-SR-B3G-02 |  | Installation, Connection & testing of Bus Bars from Basment to Ground | 22d | 2015-10-01 | 2015-10-26 | P-MEP-E-5043, C-CS-Su-B-CW-962 SS | 14d | 0d |  | 1,258,614.11 |
| C-E-SR-B3G-01 |  | Installation of Cable Trays from Basment to Ground | 23d | 2015-11-05 | 2015-12-01 | PQ-CS-C-1272, P-MEP-E-4723, C-CS-Su-B-CW-992 | 5d | 0d |  | 34,617.14 |
| C-E-SR-B3G-03 |  | Installation of Cabling & Wirring from Basment to Ground | 25d | 2015-12-02 | 2015-12-31 | C-E-SR-B3G-01 | 36d | 0d |  | 309,134.16 |

Notes:
- C-F-EC-001: Expenses: GC 101709
- C-F-EC-002: Expenses: GC 101709
- C-F-EC-003: Expenses: GC 474643
- C-F-E-LF-001: Expenses: 1 215486
- C-F-E-LF-1: Expenses: 1 215486
- C-F-E-LF-11: Expenses: 1 215486
- C-F-E-LF-21: Expenses: 1 215486
- C-F-E-LF-31: Expenses: 1 215486
- C-F-E-LF-41: Expenses: 1 215486
- C-F-E-LF-51: Expenses: 1 215486
- C-F-E-LF-61: Expenses: 1 215486
- C-MEP-Em-001: Expenses: 1 1632.26; 2 7115.35; 3 5467.3; 4 39625.6; 5 29946.7
- C-MEP-Em-012: Expenses: 1 1632.26; 2 7115.35; 3 5467.3; 4 39625.6; 5 29946.7
- C-MEP-Em-022: Expenses: 1 1632.26; 2 7115.35; 3 5467.3; 4 39625.6; 5 29946.7
- C-MEP-Em-032: Expenses: 1 1632.26; 2 5467.3; 4 39625.6; 5 29946.7
- C-E-SR-B3G-02: Expenses: 1 1258614
- C-E-SR-B3G-01: Expenses: 1 34617.1
- C-E-SR-B3G-03: Expenses: 1 309134

| ID | WBS | Activity | Duration | Start | Finish | Predecessors | Total float | Free float | Cost |
| --- | --- | --- | --- | --- | --- | --- | --- | --- | --- |
|  | 2 | **HVAC** |  | 2015-12-26 | 2016-04-07 |  |  |  |  |
| C-HVAC-SR-B3G-01 |  | Installation of Ductwork from Basment to Ground | 25d | 2015-12-26 | 2016-01-23 | PQ-CS-C-1252, P-MEP-AC-3723, C-CS-Su-B-CW-1062 | 47d | 0d | 176,292.4 |
| C-HVAC-SR-B3G-24 |  | Pressure testing of Ductwork from Basment to Ground | 20d | 2016-01-24 | 2016-02-16 | C-HVAC-SR-B3G-01, P-MEP-AC-4043, P-MEP-AC-4083 | 93d | 0d |  |
| C-HVAC-SR-B3G-03 |  | Installation of Chilled Water Pipes & Valves from Basment to Ground | 20d | 2016-02-07 | 2016-03-01 | P-MEP-AC-3803, C-CS-Su-B-CW-1122 | 33d | 0d | 126,481.06 |
| C-HVAC-SR-B3G-02 |  | Installation of Ductwork Insullation from Basment to Ground | 12d | 2016-02-17 | 2016-03-01 | C-HVAC-SR-B3G-24, P-MEP-AC-3763, P-MEP-AC-4003 | 93d | 13d | 31,110.42 |
| C-HVAC-SR-B3G-14 |  | Pressure testing & Insulation of Chilled Water Pipes from Basment to Ground | 20d | 2016-03-02 | 2016-03-24 | C-HVAC-SR-B3G-03 | 61d | 0d | 34,696.33 |
| C-HVAC-SR-B3G-4 |  | Installation of Chilled Water Pipes Control Devices & Isolator from Basment to Ground | 12d | 2016-03-26 | 2016-04-07 | C-HVAC-SR-B3G-14, P-MEP-AC-3843 | 61d | 0d | 11,364.89 |
|  | 3 | **Fire Fighting** |  | 2016-02-07 | 2016-04-23 |  |  |  |  |
| C-FF-SR-B3G-01 |  | Installation of Fire Fighting Pipes from Basment to Ground | 25d | 2016-02-07 | 2016-03-07 | PQ-CS-C-1232, C-CS-Su-B-CW-1122 | 33d | 0d | 126,849.14 |
| C-FF-SR-B3G-11 |  | Pressure testing of fire fighting pipes from Basment to Ground | 20d | 2016-03-08 | 2016-03-30 | C-FF-SR-B3G-01 | 70d | 0d | 6,676.27 |
| C-FF-SR-B3G-02 |  | Installation of fire FIghting Valves from Basment to Ground | 20d | 2016-03-31 | 2016-04-23 | C-FF-SR-B3G-11 | 70d | 0d | 74,789.66 |
|  | 4 | **Plumbing & Drainage** |  | 2016-02-07 | 2016-03-28 |  |  |  |  |
| C-PD-SR-B3G-01 |  | Installation of Water Pipes & Valves from Basment to Ground | 23d | 2016-02-07 | 2016-03-05 | P-MEP-P-2323, C-CS-Su-B-CW-1122 | 31d | 0d | 229,972.36 |
| C-PD-SR-B3G-02 |  | Installation Drainage Pipes from Basment to Ground | 23d | 2016-02-07 | 2016-03-05 | PQ-CS-C-1232, C-CS-Su-B-CW-1122 | 31d | 0d | 123,415.84 |
| C-PD-SR-B3G-11 |  | Pressure teting & Insulation of water pipes from Basment to Ground | 20d | 2016-03-06 | 2016-03-28 | C-PD-SR-B3G-01 | 106d | 0d | 12,103.8 |
| C-PD-SR-B3G-21 |  | Pressure testing of drainage pipes from Basment to Ground | 20d | 2016-03-06 | 2016-03-28 | C-PD-SR-B3G-02 | 106d | 0d | 6,495.57 |
|  | 5 | **ELV** |  | 2016-02-07 | 2016-03-30 |  |  |  |  |
| C-ELV-SR-B3G-01 |  | Installation of Cable Trays from Basment to Ground | 25d | 2016-02-07 | 2016-03-07 | PQ-CS-C-1292, C-CS-Su-B-CW-1122 | 50d | 0d | 24,509.01 |
| C-ELV-SR-B3G-02 |  | Installation of Cabling & Wirring from Basment to Ground | 20d | 2016-03-08 | 2016-03-30 | C-ELV-SR-B3G-01 | 95d | 5d | 163,542.01 |
|  | 1 | **BMS** |  | 2016-02-07 | 2016-03-30 |  |  |  |  |
| C-ELV-SR-B3G-1682 |  | Installation of Cable Trays from Basment to Ground | 25d | 2016-02-07 | 2016-03-07 | C-CS-Su-B-CW-1122 | 15d | 0d | 15,745.83 |
| C-ELV-SR-B3G-1692 |  | Installation of Cabling & Wirring from Basment to Ground | 20d | 2016-03-08 | 2016-03-30 | C-ELV-SR-B3G-1682 | 60d | 5d | 36,740.28 |
|  | 6 | **Gas** |  | 2016-02-07 | 2016-03-30 |  |  |  |  |
| C-MEP-R-Gas-1882 |  | Installation of Gas Pipes & Valves from Basment to Ground | 25d | 2016-02-07 | 2016-03-07 | C-CS-Su-B-CW-1122 | 45d | 0d | 6,742.09 |
| C-MEP-R-Gas-1892 |  | Testing of Gas Pipe from Basment to Ground | 20d | 2016-03-08 | 2016-03-30 | C-MEP-R-Gas-1882 | 90d | 5d | 749.12 |

Notes:
- C-HVAC-SR-B3G-01: Expenses: 1 176292
- C-HVAC-SR-B3G-03: Expenses: 1 126481
- C-HVAC-SR-B3G-02: Expenses: 1 31110.4
- C-HVAC-SR-B3G-14: Expenses: 1 34696.3
- C-HVAC-SR-B3G-4: Expenses: 1 11364.9
- C-FF-SR-B3G-01: Expenses: 1 126849
- C-FF-SR-B3G-11: Expenses: 1 6676.27
- C-FF-SR-B3G-02: Expenses: 1 74789.7
- C-PD-SR-B3G-01: Expenses: 1 229972
- C-PD-SR-B3G-02: Expenses: 1 123416
- C-PD-SR-B3G-11: Expenses: 1 12103.8
- C-PD-SR-B3G-21: Expenses: 1 6495.57
- C-ELV-SR-B3G-01: Expenses: 1 24509
- C-ELV-SR-B3G-02: Expenses: 1 163542
- C-ELV-SR-B3G-1682: Expenses: 1 15745.8
- C-ELV-SR-B3G-1692: Expenses: 1 36740.3
- C-MEP-R-Gas-1882: Expenses: 1 6742.09
- C-MEP-R-Gas-1892: Expenses: 1 749.12

| ID | WBS | Activity | Duration | Start | Finish | Predecessors | Total float | Free float | Calendar | Cost | AREA |
| --- | --- | --- | --- | --- | --- | --- | --- | --- | --- | --- | --- |
|  | 11 | **MEP - Core , Lobbies & Car Park** |  | 2015-06-17 | 2016-10-30 |  |  |  |  |  |  |
|  | 2 | **MEP - Basement 3** |  | 2015-06-17 | 2016-10-30 |  |  |  |  |  |  |
|  | 1 | **Electrical** |  | 2015-11-29 | 2016-08-27 |  |  |  |  |  |  |
| C-MEP-E-3186 |  | Installation of first Electrical Fix Conduits, Boxes within block work & Gypsum Boards at Basement 3 | 20d | 2015-11-29 | 2015-12-22 | C-F-P-1593 | 26d | 0d |  | 66,042.69 | GEN |
| C-MEP-E-3236 |  | Installation of Cable Trays & Truncking at Basement 3 | 18d | 2015-12-17 | 2016-01-07 | C-MEP-FF-2124 SS+10d, C-MEP-PD-2655 SS+5d, P-MEP-E-4723 | 35d | 0d |  | 69,234.28 |  |
| C-MEP-E-3196 |  | Installation of Electrical Second Fix (Cabling & Wirring etc..). at Basement 3 | 18d | 2016-01-09 | 2016-01-28 | C-MEP-E-3186, C-MEP-E-3236, P-MEP-E-4763 | 36d | 0d |  | 390,353.07 | GEN |
| C-MEP-E-3206 |  | Installation & Connection of Electrical DB's, SMDB's at Basement 3 | 16d | 2016-01-30 | 2016-02-17 | C-MEP-E-3196, P-MEP-E-5163, P-MEP-E-5203 | 36d | 0d |  | 145,700.58 | GEN |
| C-MEP-E-3226 |  | Installation & Connection of Lighting Fixtures & Socket at Basement 3 | 14d | 2016-08-11 | 2016-08-27 | C-MEP-E-3196, C-F-CF-3747, C-F-CF-3737, P-MEP-E-4843, C-F-WF-2134, C-F-WF-2144, P-MEP-E-4803 | 203d | 16d |  | 85,916.8 | GEN |
|  | 2 | **HVAC** |  | 2015-11-12 | 2016-08-10 |  |  |  |  |  |  |
| C-MEP-AC-4248 |  | Installation of Ductwork, Insulation & Dampers at Basement 3 | 25d | 2015-11-12 | 2015-12-10 | C-F-P-1593 SS, SD-CS-B3-172, P-MEP-AC-3723 | 45d | 0d |  | 207,402.82 | GEN |
| C-MEP-AC-4268 |  | Installation of Chilled Water Pipes & Valves at Basement 3 | 25d | 2015-11-24 | 2015-12-23 | C-MEP-AC-4248 SS+10d, P-MEP-AC-3803 | 152d | 0d |  | 47,430.4 | GEN |
| C-MEP-AC-4308 |  | Installation of HVAC equipments AHU's, FCU's, ERU's, VAV's, CAV's & Fans at Basement 3 | 25d | 2015-12-08 | 2016-01-06 | C-MEP-AC-4298 FF, C-MEP-AC-4288 FF, C-MEP-AC-4248 SS, P-MEP-AC-4163, P-MEP-AC-4203, P-MEP-AC-4243, P-MEP-AC-4483, P-MEP-AC-4523, P-MEP-AC-4523 FF | 152d | 49d |  | 463,311 | GEN |
| C-MEP-AC-4298 |  | Pressure testing of Ductwork at Basement 3 | 8d | 2015-12-12 | 2015-12-21 | C-MEP-AC-4248, P-MEP-AC-4043 | 166d | 0d |  |  | GEN |
| C-MEP-AC-4258 |  | Installation of Silencers, Attenuators, Isolators & Detectors at Basement 3 | 12d | 2015-12-22 | 2016-01-04 | C-MEP-AC-4298, P-MEP-AC-4083, P-MEP-AC-4003, P-MEP-AC-3763 | 166d | 71d |  | 41,704.9 | GEN |
| C-MEP-AC-4288 |  | Pressure testing & Insulation of Chilled Water Pipes at Basement 3 | 12d | 2015-12-24 | 2016-01-06 | C-MEP-AC-4268, P-MEP-AC-3883, P-MEP-AC-3883 FF | 152d | 0d |  | 8,821.1 | GEN |
| C-MEP-AC-4278 |  | Installation of Chilled Water Pipes Control Devices & Isolator at Basement 3 | 8d | 2016-01-07 | 2016-01-16 | C-MEP-AC-4288, P-MEP-AC-3843 | 156d | 61d |  | 2,889.38 | GEN |
| C-MEP-AC-4318 |  | Installation of Grilles, Diffusers & Controller at Basement 3 | 12d | 2016-07-28 | 2016-08-10 | C-MEP-AC-4308, C-F-CF-3747, C-F-CF-3737, C-F-WF-2144 FF, C-F-CF-3737 FF, C-F-WF-2134 FF, P-MEP-AC-4123 | 180d | 30d |  | 88,688.53 | GEN |
|  | 3 | **Fire Fighting** |  | 2015-11-24 | 2016-05-01 |  |  |  |  |  |  |
| C-MEP-FF-2124 |  | Installation of FIre fighting Pipes at Basement 3 | 25d | 2015-11-24 | 2015-12-23 | C-MEP-AC-4248 SS+10d, SD-CS-B3-212 | 45d | 0d |  | 93,467.79 | GEN |
| C-MEP-FF-2144 |  | Pressure testing of fire fighting pipes at Basement 3 | 8d | 2015-12-24 | 2016-01-02 | C-MEP-FF-2124 | 136d | 0d |  | 5,280.67 | GEN |
| C-MEP-FF-2134 |  | Installation of fire Fighting Valves at Basement 3 | 20d | 2016-01-03 | 2016-01-25 | C-MEP-FF-2144, P-MEP-FF-3403, P-MEP-FF-3443 | 136d | 33d |  | 33,655.35 | GEN |
| C-MEP-FF-2154 |  | Installation of Fire Fighting Sprinklers & Fire hose Cabinets & Extinguishers at Basement 3 | 14d | 2016-04-16 | 2016-05-01 | C-MEP-FF-2134, C-F-CF-3737, C-F-CF-3727, C-MEP-FF-2144, P-MEP-FF-3563 | 103d | 0d |  | 117,330.78 | GEN |
|  | 4 | **Plumbing & Drainage** |  | 2015-06-17 | 2016-08-04 |  |  |  |  |  |  |
| C-MEP-PD-2915 |  | Installation of Water Tanks valves, Switches & accessories | 25d | 2015-06-17 | 2015-07-18 | C-CS-Su-A-GWT-111, C-CS-Su-A-GWT-171, C-CS-Su-A-GWT-211, C-CS-Su-A-GWT-251, C-CS-Su-A-GWT-291, C-CS-Su-A-GWT-331, C-CS-Su-A-GWT-371, C-CS-Su-A-GWT-411, P-MEP-P-2523 | 257d | 82d | *APB - 6 D week + Qatar Holiday | 377,243.88 |  |
| C-MEP-PD-2655 |  | Installation of Water Pipes & Valves (Hot & Cold atc..) at Basement 3 | 20d | 2015-12-12 | 2016-01-04 | C-MEP-FF-2124 SS, C-F-P-1603, SD-CS-B3-292 | 35d | 0d |  | 169,453.32 | GEN |
| C-MEP-PD-2665 |  | Installation drainage Pipes at Basement 3 | 25d | 2015-12-12 | 2016-01-10 | C-MEP-PD-2655 SS, P-MEP-P-2443, P-MEP-P-2483 | 141d | 0d |  | 58,460.13 | GEN |
| C-MEP-PD-2675 |  | Pressure testing & Insullation of water pipes at Basement 3 | 8d | 2016-01-05 | 2016-01-13 | C-MEP-PD-2655, P-MEP-P-2523 | 146d | 43d |  | 9,573.63 | GEN |
| C-MEP-PD-2685 |  | Pressure testing of drainage pipes at Basement 3 | 8d | 2016-01-11 | 2016-01-19 | C-MEP-PD-2665, P-MEP-P-2523 | 141d | 38d |  | 1,651.42 | GEN |
| C-MEP-PD-2695 |  | Installation of Outlets, Drains, Gullies, Cowls, & Clean out & Interceptors at Basement 3 | 20d | 2016-07-13 | 2016-08-04 | C-MEP-PD-2675, C-MEP-PD-2675 FF, C-F-FF-2134, C-F-WF-2134, C-F-FF-2134 FF, C-F-WF-2134 FF, C-F-DW-2134, P-MEP-P-2643, C-F-WF-2124, P-AF-B-1123 | 145d | 10d |  | 162,093.92 | GEN |

Notes:
- C-MEP-E-3186: Expenses: 1 66042.7
- C-MEP-E-3236: Expenses: 1 69234.3
- C-MEP-E-3196: Expenses: 1 231851; 2 158502
- C-MEP-E-3206: Expenses: 1 145701
- C-MEP-E-3226: Expenses: 1 85916.8
- C-MEP-AC-4248: Expenses: 1 207403
- C-MEP-AC-4268: Expenses: 1 47430.4
- C-MEP-AC-4308: Expenses: 1 463311
- C-MEP-AC-4258: Expenses: 1 41704.9
- C-MEP-AC-4288: Expenses: 1 8821.1
- C-MEP-AC-4278: Expenses: 1 2889.38
- C-MEP-AC-4318: Expenses: 1 88688.5
- C-MEP-FF-2124: Expenses: 1 93467.8
- C-MEP-FF-2144: Expenses: 1 5280.67
- C-MEP-FF-2134: Expenses: 1 33655.3
- C-MEP-FF-2154: Expenses: 1 117331
- C-MEP-PD-2915: Expenses: 1 377244
- C-MEP-PD-2655: Expenses: 1 169453
- C-MEP-PD-2665: Expenses: 1 58460.1
- C-MEP-PD-2675: Expenses: 1 9573.63
- C-MEP-PD-2685: Expenses: 1 1651.42
- C-MEP-PD-2695: Expenses: 1 23962.6; 2 138131

| ID | WBS | Activity | Duration | Start | Finish | Predecessors | Total float | Free float | Cost | AREA |
| --- | --- | --- | --- | --- | --- | --- | --- | --- | --- | --- |
|  | 7 | **ELV systems** |  | 2015-12-12 | 2016-10-30 |  |  |  |  |  |
|  | 1 | **Room Management System** |  | 2015-12-12 | 2016-10-30 |  |  |  |  |  |
| C-ELV-RMS-2655 |  | Installation of RMS first fix (Conduits, Boxes within block work , Gypsum Boards & Raised FLooring at Basement 3 | 20d | 2015-12-12 | 2016-01-04 | C-F-P-1603, C-F-P-1593, SD-CS-B3-652 | 124d | 0d | 11,902.78 | GEN |
| C-ELV-RMS-2695 |  | Installation of Cable Trays & Truncking at Basement 3 | 25d | 2015-12-24 | 2016-01-21 | C-ELV-CS-2695 SS+5d | 103d | 0d | 2,769.38 |  |
| C-ELV-RMS-2665 |  | Installation of second fix (Cabling & Wirring etc..) at Basement 3 | 25d | 2016-01-23 | 2016-02-21 | C-ELV-RMS-2655, C-ELV-RMS-2695 | 109d | 0d | 11,902.78 | GEN |
| C-ELV-RMS-2675 |  | Installation & Connection of ethernets & HVAC thermostates etc.. at Basement 3 | 25d | 2016-02-22 | 2016-03-21 | C-ELV-RMS-2665 | 109d | 6d | 27,773.16 | GEN |
| C-ELV-RMS-2685 |  | Installtion & Connection of Panels, Controller, switches, server etc..) at Basement 3 | 20d | 2016-10-08 | 2016-10-30 | C-ELV-RMS-2675, M-TF-001 | 67d | 0d | 27,773.16 |  |
|  | 12 | **Fire Alarm & Detection System** |  | 2015-12-12 | 2016-04-19 |  |  |  |  |  |
| C-ELV-FA-2655 |  | Installation of FA first Fix Conduits, Boxes within block work , Gypsum Boards & Raised FLooring at Basement 3 | 20d | 2015-12-12 | 2016-01-04 | C-F-P-1603, C-F-P-1593, SD-CS-B3-732 | 129d | 0d | 13,660.92 | GEN |
| C-ELV-FA-2695 |  | Installation of Cable Trays & Truncking at Basement 3 | 25d | 2016-01-05 | 2016-02-02 | C-ELV-MSPA-2695 SS+5d | 103d | 0d | 2,769.38 |  |
| C-ELV-FA-2665 |  | Installation of second fix (Cabling & Wirring etc..) at Basement 3 | 20d | 2016-02-03 | 2016-02-27 | C-ELV-FA-2655, C-ELV-FA-2695 | 104d | 0d | 22,768.2 | GEN |
| C-ELV-FA-2675 |  | Installation & Connection of heat detector, smoke detector, flame detector etc.. at Basement 3 | 25d | 2016-02-28 | 2016-03-27 | C-ELV-FA-2665 | 104d | 0d | 27,321.84 | GEN |
| C-ELV-FA-2685 |  | Installtion & Connection of Racks & Panels at Basement 3 | 20d | 2016-03-28 | 2016-04-19 | C-ELV-FA-2675 | 226d | 159d | 27,321.84 |  |
|  | 2 | **Music System & Public Address System** |  | 2015-12-12 | 2016-04-19 |  |  |  |  |  |
| C-ELV-MSPA-2655 |  | Installation of MS/PA first fix (Conduits, Boxes within block work, Gypsum Boards & Raised FLooring at Basement 3 | 20d | 2015-12-12 | 2016-01-04 | C-F-P-1603, C-F-P-1593, SD-CS-B3-692 | 124d | 0d | 6,994.34 | GEN |
| C-ELV-MSPA-2695 |  | Installation of Cable Trays & Truncking at Basement 3 | 25d | 2015-12-30 | 2016-01-27 | C-ELV-RMS-2695 SS+5d | 103d | 0d | 2,769.38 |  |
| C-ELV-MSPA-2665 |  | Installation of second fix (Cabling & Wirring etc..) at Basement 3 | 25d | 2016-01-28 | 2016-02-27 | C-ELV-MSPA-2655, C-ELV-MSPA-2695 | 104d | 0d | 6,994.34 | GEN |
| C-ELV-MSPA-2675 |  | Installation & Connection of speakers, Amplifier & Controller at Basement 3 | 25d | 2016-02-28 | 2016-03-27 | C-ELV-MSPA-2665 | 104d | 0d | 16,320.12 | GEN |
| C-ELV-MSPA-2685 |  | Installtion & Connection of Media hub, panels and processor at Basement 3 | 20d | 2016-03-28 | 2016-04-19 | C-ELV-MSPA-2675 | 226d | 159d | 16,320.12 |  |
|  | 3 | **IP CCTV & Access Control System** |  | 2015-12-12 | 2016-03-24 |  |  |  |  |  |
| C-ELV-CCTV-2655 |  | Installation of CCTV first Fix Conduits, Boxes within block work, Gypsum Boards & Raised FLooring at Basement 3 | 20d | 2015-12-12 | 2016-01-04 | C-F-P-1603, C-F-P-1593, SD-CS-B3-772, SD-CS-B3-752, SD-CS-B2-472 | 134d | 0d | 8,161.35 | GEN |
| C-ELV-CCTV-2695 |  | Installation of Cable Trays & Truncking at Basement 3 | 25d | 2016-01-11 | 2016-02-08 | C-ELV-FA-2695 SS+5d | 103d | 0d | 2,769.38 |  |
| C-ELV-CCTV-2665 |  | Installation of second fix (Cabling & Wirring etc..) at Basement 3 | 20d | 2016-02-09 | 2016-03-03 | C-ELV-CCTV-2655, C-ELV-CCTV-2695 | 106d | 0d | 19,043.14 | GEN |
| C-ELV-CCTV-2685 |  | Installtion & Connection of Racks, Panels etc... at Basement 3 | 25d | 2016-02-25 | 2016-03-24 | C-ELV-CCTV-2675 FF | 248d | 181d | 7,322.52 |  |
| C-ELV-CCTV-2675 |  | Installation & Connection of Camera's & Alarms at Basement 3 | 18d | 2016-03-05 | 2016-03-24 | C-ELV-CCTV-2665 | 106d | 0d | 183,698.91 | GEN |

Notes:
- C-ELV-RMS-2655: Expenses: 1 11902.8
- C-ELV-RMS-2695: Expenses: 1 2769.38
- C-ELV-RMS-2665: Expenses: 1 11902.8
- C-ELV-RMS-2675: Expenses: 1 27773.2
- C-ELV-RMS-2685: Expenses: 1 27773.2
- C-ELV-FA-2655: Expenses: 1 13660.9
- C-ELV-FA-2695: Expenses: 1 2769.38
- C-ELV-FA-2665: Expenses: 1 22768.2
- C-ELV-FA-2675: Expenses: 1 27321.8
- C-ELV-FA-2685: Expenses: 1 27321.8
- C-ELV-MSPA-2655: Expenses: 1 6994.34
- C-ELV-MSPA-2695: Expenses: 1 2769.38
- C-ELV-MSPA-2665: Expenses: 1 6994.34
- C-ELV-MSPA-2675: Expenses: 1 16320.1
- C-ELV-MSPA-2685: Expenses: 1 16320.1
- C-ELV-CCTV-2655: Expenses: 1 8161.35
- C-ELV-CCTV-2695: Expenses: 1 2769.38
- C-ELV-CCTV-2665: Expenses: 1 19043.1
- C-ELV-CCTV-2685: Expenses: 1 7322.52
- C-ELV-CCTV-2675: Expenses: 1 183699

| ID | WBS | Activity | Duration | Start | Finish | Predecessors | Total float | Free float | Cost | AREA |
| --- | --- | --- | --- | --- | --- | --- | --- | --- | --- | --- |
|  | 7 | **Communication System** |  | 2015-12-12 | 2016-10-30 |  |  |  |  |  |
| C-ELV-CS-2655 |  | Installation of CS first fix (Conduits, Boxes within block work, Gypsum Boards & Raised FLooring at Basement 3 | 20d | 2015-12-12 | 2016-01-04 | C-F-P-1603, C-F-P-1593, SD-CS-B3-612 | 129d | 0d | 32,708.4 | GEN |
| C-ELV-CS-2695 |  | Installation of Cable Trays & Truncking at Basement 3 | 25d | 2015-12-17 | 2016-01-16 | C-MEP-E-3236 SS | 103d | 0d | 2,769.38 |  |
| C-ELV-CS-2665 |  | Installation of second fix (Cabling & Wirring etc..) at Basement 3 | 25d | 2016-01-17 | 2016-02-15 | C-ELV-CS-2655, C-ELV-CS-2695 | 119d | 0d | 98,125.21 | GEN |
| C-ELV-CS-2675 |  | Installation & Connection of Wireless Access points & IP dect phone & RJ 45 at Basement 3 | 20d | 2016-02-16 | 2016-03-09 | C-ELV-CS-2665 | 119d | 16d | 93,342.54 | GEN |
| C-ELV-CS-2685 |  | Installtion & Connection of Controller & Instrumentation at Basement 3 | 20d | 2016-10-08 | 2016-10-30 | C-ELV-CS-2675, M-TF-001 | 67d | 0d | 223,314.69 |  |
|  | 4 | **IP, SMATV & QAM Television System** |  | 2015-12-12 | 2016-04-18 |  |  |  |  |  |
| C-ELV-SMATV-2655 |  | Installation of SMATV first Fix Conduits, Boxes within block work , Gypsum Boards & Raised FLooring at Basement 3 | 20d | 2015-12-12 | 2016-01-04 | C-F-P-1603, C-F-P-1593, SD-CS-B3-812 | 134d | 0d | 4,452.18 | GEN |
| C-ELV-SMATV-2695 |  | Installation of Cable Trays & Truncking at Basement 3 | 25d | 2016-01-17 | 2016-02-15 | C-ELV-CCTV-2695 SS+5d | 103d | 0d | 2,769.38 |  |
| C-ELV-SMATV-2665 |  | Installation of second fix (Cabling & Wirring etc..) at Basement 3 | 16d | 2016-02-16 | 2016-03-05 | C-ELV-SMATV-2655, C-ELV-SMATV-2695 | 105d | 0d | 10,388.41 | GEN |
| C-ELV-SMATV-2675 |  | Installation & Connection of Outlets, switches and splitter at Basement 3 | 18d | 2016-03-06 | 2016-03-26 | C-ELV-SMATV-2665 | 105d | 0d | 6,537.45 | GEN |
| C-ELV-SMATV-2685 |  | Installtion & Connection of SMATV & QAM fiber & receiver at Basement 3 | 20d | 2016-03-27 | 2016-04-18 | C-ELV-SMATV-2675 | 227d | 160d | 2,419.21 |  |
|  | 5 | **BMS system** |  | 2015-12-12 | 2016-04-20 |  |  |  |  |  |
| C-MEP-BMS-2655 |  | Installation of BMS first Fix Conduits, Boxes within block work , Gypsum Boards & Raised FLooring at Basement 3 | 20d | 2015-12-12 | 2016-01-04 | C-F-P-1603, C-F-P-1593, SD-CS-B3-572 | 134d | 0d | 8,895.95 | GEN |
| C-MEP-BMS-2695 |  | Installation of Cable trays & Trunking at Basement 3 | 20d | 2016-01-23 | 2016-02-15 | C-ELV-SMATV-2695 SS+5d | 103d | 0d |  |  |
| C-MEP-BMS-2665 |  | Installation of BMS Cabling & Wirring at Basement 3 | 16d | 2016-02-16 | 2016-03-05 | C-MEP-BMS-2655, C-MEP-BMS-2695 | 103d | 0d | 11,861.27 | GEN |
| C-MEP-BMS-2675 |  | Installation & Connection of BMS Sensors, Relays, & Valves at Basement 3 | 20d | 2016-03-06 | 2016-03-28 | C-MEP-BMS-2665, C-MEP-PD-2685, C-MEP-PD-2675, C-MEP-FF-2134, C-MEP-AC-4308, C-MEP-AC-4288, C-MEP-AC-4298 | 103d | 0d | 14,826.58 | GEN |
| C-MEP-BMS-2685 |  | Installtion & Connection of BMS Racks, Panels etc... at Basement 3 | 20d | 2016-03-29 | 2016-04-20 | C-MEP-BMS-2675 | 290d | 131d | 14,826.58 |  |
|  | 5 | **MEP - Basement 2** |  | 2015-11-30 | 2016-10-05 |  |  |  |  |  |
|  | 1 | **Electrical** |  | 2015-12-23 | 2016-10-05 |  |  |  |  |  |
| C-MEP-E-3246 |  | Installation of first Electrical Fix Conduits, Boxes within block work & Gypsum Boards at Basement 2 | 20d | 2015-12-23 | 2016-01-14 | C-F-P-1623, C-MEP-E-3186 | 26d | 0d | 66,042.69 | GEN |
| C-MEP-E-3296 |  | Installation of Cable Trays & Truncking at Basement 2 | 18d | 2016-01-11 | 2016-01-31 | C-MEP-FF-2164 SS+10d, C-MEP-PD-2705 SS+5d, C-MEP-E-3236 SS | 15d | 0d | 69,234.28 |  |
| C-MEP-E-3256 |  | Installation of Electrical Second Fix (Cabling & Wirring etc..). at Basement 2 | 18d | 2016-02-01 | 2016-02-22 | C-MEP-E-3246, C-MEP-E-3296, C-MEP-E-3196 SS | 32d | 0d | 390,353.07 | GEN |
| C-MEP-E-3266 |  | Installation & Connection of Electrical DB's, SMDB's & MCC's at Basement 2 | 16d | 2016-02-23 | 2016-03-12 | C-MEP-E-3256, C-MEP-E-3206 SS | 32d | 4d | 585,932.39 | GEN |
| C-MEP-E-3286 |  | Installation & Connection of Lighting Fixtures & Sockets at Basement 2 | 14d | 2016-09-19 | 2016-10-05 | C-MEP-E-3256, C-F-CF-3817, C-F-CF-3807, C-F-WF-2174, C-F-WF-2184, C-MEP-E-3226, C-MEP-E-3226 FF | 187d | 6d | 85,916.8 | GEN |

Notes:
- C-ELV-CS-2655: Expenses: 1 32708.4
- C-ELV-CS-2695: Expenses: 1 2769.38
- C-ELV-CS-2665: Expenses: 1 98125.2
- C-ELV-CS-2675: Expenses: 1 93342.5
- C-ELV-CS-2685: Expenses: 1 223315
- C-ELV-SMATV-2655: Expenses: 1 4452.18
- C-ELV-SMATV-2695: Expenses: 1 2769.38
- C-ELV-SMATV-2665: Expenses: 1 10388.4
- C-ELV-SMATV-2675: Expenses: 1 6537.45
- C-ELV-SMATV-2685: Expenses: 1 2419.21
- C-MEP-BMS-2655: Expenses: 1 8895.95
- C-MEP-BMS-2665: Expenses: 1 11861.3
- C-MEP-BMS-2675: Expenses: 1 14826.6
- C-MEP-BMS-2685: Expenses: 1 14826.6
- C-MEP-E-3246: Expenses: 1 66042.7
- C-MEP-E-3296: Expenses: 1 69234.3
- C-MEP-E-3256: Expenses: 1 231851; 2 158502
- C-MEP-E-3266: Expenses: 1 145701; 2 440232
- C-MEP-E-3286: Expenses: 1 85916.8

| ID | WBS | Activity | Duration | Start | Finish | Predecessors | Total float | Free float | Cost | AREA |
| --- | --- | --- | --- | --- | --- | --- | --- | --- | --- | --- |
|  | 2 | **HVAC** |  | 2015-11-30 | 2016-09-18 |  |  |  |  |  |
| C-MEP-AC-4328 |  | Installation of Ductwork, Insulation & Dampers at Basement 2 | 25d | 2015-11-30 | 2015-12-29 | C-F-P-1623 SS, SD-CS-B3-152 | 26d | 0d | 207,402.82 | GEN |
| C-MEP-AC-4348 |  | Installation of Chilled Water Pipes & Valves at Basement 2 | 25d | 2015-12-12 | 2016-01-10 | C-MEP-AC-4328 SS+10d | 69d | 0d | 47,430.4 | GEN |
| C-MEP-AC-4388 |  | Installation of HVAC equipments AHU's, FCU's, ERU's, VAV's, CAV's & Fans at Basement 2 | 25d | 2015-12-27 | 2016-01-24 | C-MEP-AC-4378 FF, C-MEP-AC-4368 FF, C-MEP-AC-4328 SS | 69d | 54d | 601,338.97 | GEN |
| C-MEP-AC-4378 |  | Pressure testing of Ductwork at Basement 2 | 8d | 2015-12-30 | 2016-01-07 | C-MEP-AC-4328 | 83d | 0d |  | GEN |
| C-MEP-AC-4338 |  | Installation of Silencers, Attenuators, Isolators & Detectors at Basement 2 | 12d | 2016-01-09 | 2016-01-21 | C-MEP-AC-4378 | 91d | 76d | 41,704.9 | GEN |
| C-MEP-AC-4368 |  | Pressure testing & Insulation of Chilled Water Pipes at Basement 2 | 12d | 2016-01-11 | 2016-01-24 | C-MEP-AC-4348 | 69d | 0d | 8,821.1 | GEN |
| C-MEP-AC-4358 |  | Installation of Chilled Water Pipes Control Devices & Isolator at Basement 2 | 8d | 2016-01-25 | 2016-02-02 | C-MEP-AC-4368 | 81d | 66d | 2,889.38 | GEN |
| C-MEP-AC-4398 |  | Installation of Grilles, Diffusers & Controller at Basement 2 | 12d | 2016-09-01 | 2016-09-18 | C-MEP-AC-4388, C-F-CF-3817, C-F-CF-3807, C-F-WF-2184 FF, C-F-CF-3807 FF, C-F-WF-2174 FF, C-MEP-AC-4318 SS | 150d | 20d | 88,688.53 | GEN |
|  | 3 | **Fire Fighting** |  | 2015-12-12 | 2016-06-05 |  |  |  |  |  |
| C-MEP-FF-2164 |  | Installation of FIre fighting Pipes at Basement 2 | 25d | 2015-12-12 | 2016-01-10 | C-MEP-AC-4328 SS+10d, SD-CS-B3-192 | 26d | 0d | 93,467.79 | GEN |
| C-MEP-FF-2184 |  | Pressure testing of fire fighting pipes at Basement 2 | 8d | 2016-01-11 | 2016-01-19 | C-MEP-FF-2164 | 53d | 0d | 5,280.67 | GEN |
| C-MEP-FF-2174 |  | Installation of fire Fighting Valves at Basement 2 | 20d | 2016-01-20 | 2016-02-13 | C-MEP-FF-2184 | 53d | 38d | 33,655.35 | GEN |
| C-MEP-FF-2194 |  | Installation of Fire Fighting Sprinklers & Fire hose Cabinets & Extinguishers at Basement 2 | 14d | 2016-05-21 | 2016-06-05 | C-MEP-FF-2174, C-F-CF-3807, C-F-CF-3797, C-MEP-FF-2184 | 79d | 0d | 117,330.78 | GEN |
|  | 4 | **Plumbing & Drainage** |  | 2016-01-05 | 2016-09-08 |  |  |  |  |  |
| C-MEP-PD-2705 |  | Installation of Water Pipes & Valves (Hot & Cold atc..) at Basement 2 | 20d | 2016-01-05 | 2016-01-27 | C-MEP-FF-2164 SS, C-F-P-1633, SD-CS-B3-272 | 6d | 0d | 169,453.32 | GEN |
| C-MEP-PD-2715 |  | Installation drainage Pipes at Basement 2 | 25d | 2016-01-05 | 2016-02-02 | C-MEP-PD-2705 SS | 6d | 0d | 58,460.13 | GEN |
| C-MEP-PD-2725 |  | Pressure testing & Insullation of water pipes at Basement 2 | 8d | 2016-01-28 | 2016-02-06 | C-MEP-PD-2705 | 11d | 5d | 9,573.63 | GEN |
| C-MEP-PD-2735 |  | Pressure testing of drainage pipes at Basement 2 | 8d | 2016-02-03 | 2016-02-13 | C-MEP-PD-2715 | 6d | 0d | 1,651.42 | GEN |
| C-MEP-PD-2745 |  | Installation of Outlets, Drains, Gullies, Cowls, & Clean out at Basement 2 | 20d | 2016-08-17 | 2016-09-08 | C-MEP-PD-2725, C-MEP-PD-2725 FF, C-F-FF-2174, C-F-WF-2174, C-F-FF-2174 FF, C-F-WF-2194, C-F-WF-2174 FF, C-F-DW-2174, C-MEP-PD-2695 | 135d | 0d | 23,962.64 | GEN |
|  | 7 | **ELV systems** |  | 2016-01-05 | 2016-05-12 |  |  |  |  |  |
|  | 1 | **Room Management System** |  | 2016-01-05 | 2016-05-07 |  |  |  |  |  |
| C-ELV-RMS-2705 |  | Installation of RMS first fix (Conduits, Boxes within block work , Gypsum Boards & Raised FLooring at Basement 2 | 20d | 2016-01-05 | 2016-01-27 | C-F-P-1633, C-F-P-1623, SD-CS-B3-632 | 36d | 5d | 11,902.78 | GEN |
| C-ELV-RMS-2745 |  | Installation of Cable Trays & Truncking at Basement 2 | 25d | 2016-01-17 | 2016-02-15 | C-ELV-CS-2745 SS+5d | 15d | 0d | 2,769.38 |  |
| C-ELV-RMS-2715 |  | Installation of second fix (Cabling & Wirring etc..) at Basement 2 | 25d | 2016-02-16 | 2016-03-15 | C-ELV-RMS-2705, C-ELV-RMS-2745 | 21d | 0d | 11,902.78 | GEN |
| C-ELV-RMS-2725 |  | Installation & Connection of ethernets & HVAC thermostates etc.. at Basement 2 | 25d | 2016-03-16 | 2016-04-13 | C-ELV-RMS-2715 | 21d | 0d | 27,773.16 | GEN |
| C-ELV-RMS-2735 |  | Installtion & Connection of Panels, Controller, switches, server etc..) at Basement 2 | 20d | 2016-04-14 | 2016-05-07 | C-ELV-RMS-2725 | 227d | 160d | 27,773.16 |  |

Notes:
- C-MEP-AC-4328: Expenses: 1 207403
- C-MEP-AC-4348: Expenses: 1 47430.4
- C-MEP-AC-4388: Expenses: 1 601339
- C-MEP-AC-4338: Expenses: 1 41704.9
- C-MEP-AC-4368: Expenses: 1 8821.1
- C-MEP-AC-4358: Expenses: 1 2889.38
- C-MEP-AC-4398: Expenses: 1 88688.5
- C-MEP-FF-2164: Expenses: 1 93467.8
- C-MEP-FF-2184: Expenses: 1 5280.67
- C-MEP-FF-2174: Expenses: 1 33655.3
- C-MEP-FF-2194: Expenses: 1 117331
- C-MEP-PD-2705: Expenses: 1 169453
- C-MEP-PD-2715: Expenses: 1 58460.1
- C-MEP-PD-2725: Expenses: 1 9573.63
- C-MEP-PD-2735: Expenses: 1 1651.42
- C-MEP-PD-2745: Expenses: 1 23962.6
- C-ELV-RMS-2705: Expenses: 1 11902.8
- C-ELV-RMS-2745: Expenses: 1 2769.38
- C-ELV-RMS-2715: Expenses: 1 11902.8
- C-ELV-RMS-2725: Expenses: 1 27773.2
- C-ELV-RMS-2735: Expenses: 1 27773.2

| ID | WBS | Activity | Duration | Start | Finish | Predecessors | Total float | Free float | Cost | AREA |
| --- | --- | --- | --- | --- | --- | --- | --- | --- | --- | --- |
|  | 12 | **Fire Alarm & Detection System** |  | 2016-01-05 | 2016-05-12 |  |  |  |  |  |
| C-ELV-FA-2705 |  | Installation of FA first Fix Conduits, Boxes within block work , Gypsum Boards & Raised FLooring at Basement 2 | 20d | 2016-01-05 | 2016-01-27 | C-F-P-1633, C-F-P-1623, SD-CS-B3-712 | 41d | 5d | 13,660.92 | GEN |
| C-ELV-FA-2745 |  | Installation of Cable Trays & Truncking at Basement 2 | 25d | 2016-01-28 | 2016-02-27 | C-ELV-MSPA-2745 SS+5d | 15d | 0d | 2,769.38 |  |
| C-ELV-FA-2715 |  | Installation of second fix (Cabling & Wirring etc..) at Basement 2 | 20d | 2016-02-28 | 2016-03-21 | C-ELV-FA-2705, C-ELV-FA-2745 | 16d | 0d | 22,768.2 | GEN |
| C-ELV-FA-2725 |  | Installation & Connection of heat detector, smoke detector, flame detector etc.. at Basement 2 | 25d | 2016-03-22 | 2016-04-19 | C-ELV-FA-2715 | 16d | 0d | 27,321.84 | GEN |
| C-ELV-FA-2735 |  | Installtion & Connection of Racks & Panels at Basement 2 | 20d | 2016-04-20 | 2016-05-12 | C-ELV-FA-2725 | 222d | 155d | 27,321.84 |  |
|  | 2 | **Music System & Public Address System** |  | 2016-01-05 | 2016-05-12 |  |  |  |  |  |
| C-ELV-MSPA-2705 |  | Installation of MS/PA first fix (Conduits, Boxes within block work, Gypsum Boards & Raised FLooring at Basement 2 | 20d | 2016-01-05 | 2016-01-27 | C-F-P-1633, C-F-P-1623, SD-CS-B3-672 | 36d | 5d | 6,994.34 | GEN |
| C-ELV-MSPA-2745 |  | Installation of Cable Trays & Truncking at Basement 2 | 25d | 2016-01-23 | 2016-02-21 | C-ELV-RMS-2745 SS+5d | 15d | 0d | 2,769.38 |  |
| C-ELV-MSPA-2715 |  | Installation of second fix (Cabling & Wirring etc..) at Basement 2 | 25d | 2016-02-22 | 2016-03-21 | C-ELV-MSPA-2705, C-ELV-MSPA-2745 | 16d | 0d | 6,994.34 | GEN |
| C-ELV-MSPA-2725 |  | Installation & Connection of speakers, Amplifier & Controller at Basement 2 | 25d | 2016-03-22 | 2016-04-19 | C-ELV-MSPA-2715 | 16d | 0d | 16,320.12 | GEN |
| C-ELV-MSPA-2735 |  | Installtion & Connection of Media hub, panels and processor at Basement 2 | 20d | 2016-04-20 | 2016-05-12 | C-ELV-MSPA-2725 | 222d | 155d | 16,320.12 |  |
|  | 3 | **IP CCTV & Access Control System** |  | 2016-01-05 | 2016-04-17 |  |  |  |  |  |
| C-ELV-CCTV-2705 |  | Installation of CCTV first Fix Conduits, Boxes within block work, Gypsum Boards & Raised FLooring at Basement 2 | 20d | 2016-01-05 | 2016-01-27 | C-F-P-1633, C-F-P-1623 | 48d | 5d | 8,161.35 | GEN |
| C-ELV-CCTV-2745 |  | Installation of Cable Trays & Truncking at Basement 2 | 25d | 2016-02-03 | 2016-03-03 | C-ELV-FA-2745 SS+5d | 15d | 0d | 2,769.38 |  |
| C-ELV-CCTV-2715 |  | Installation of second fix (Cabling & Wirring etc..) at Basement 2 | 20d | 2016-03-05 | 2016-03-27 | C-ELV-CCTV-2705, C-ELV-CCTV-2745 | 18d | 0d | 19,043.14 | GEN |
| C-ELV-CCTV-2735 |  | Installtion & Connection of Racks, Panels etc... at Basement 2 | 25d | 2016-03-20 | 2016-04-17 | C-ELV-CCTV-2725 FF | 244d | 177d | 7,322.52 |  |
| C-ELV-CCTV-2725 |  | Installation & Connection of Camera's & Alarms at Basement 2 | 18d | 2016-03-28 | 2016-04-17 | C-ELV-CCTV-2715 | 18d | 0d | 183,698.91 | GEN |
|  | 7 | **Communication System** |  | 2016-01-05 | 2016-04-25 |  |  |  |  |  |
| C-ELV-CS-2705 |  | Installation of CS first fix (Conduits, Boxes within block work, Gypsum Boards & Raised FLooring at Basement 2 | 20d | 2016-01-05 | 2016-01-27 | C-F-P-1633, C-F-P-1623, SD-CS-B3-592 | 41d | 5d | 32,708.4 | GEN |
| C-ELV-CS-2745 |  | Installation of Cable Trays & Truncking at Basement 2 | 25d | 2016-01-11 | 2016-02-08 | C-MEP-E-3296 SS | 15d | 0d | 2,769.38 |  |
| C-ELV-CS-2715 |  | Installation of second fix (Cabling & Wirring etc..) at Basement 2 | 25d | 2016-02-09 | 2016-03-09 | C-ELV-CS-2705, C-ELV-CS-2745 | 31d | 0d | 98,125.21 | GEN |
| C-ELV-CS-2725 |  | Installation & Connection of Wireless Access points & IP dect phone & RJ 45 at Basement 2 | 20d | 2016-03-10 | 2016-04-02 | C-ELV-CS-2715 | 31d | 0d | 93,342.54 | GEN |
| C-ELV-CS-2735 |  | Installtion & Connection of Controller & Instrumentation at Basement 2 | 20d | 2016-04-03 | 2016-04-25 | C-ELV-CS-2725 | 237d | 170d | 223,314.69 |  |

Notes:
- C-ELV-FA-2705: Expenses: 1 13660.9
- C-ELV-FA-2745: Expenses: 1 2769.38
- C-ELV-FA-2715: Expenses: 1 22768.2
- C-ELV-FA-2725: Expenses: 1 27321.8
- C-ELV-FA-2735: Expenses: 1 27321.8
- C-ELV-MSPA-2705: Expenses: 1 6994.34
- C-ELV-MSPA-2745: Expenses: 1 2769.38
- C-ELV-MSPA-2715: Expenses: 1 6994.34
- C-ELV-MSPA-2725: Expenses: 1 16320.1
- C-ELV-MSPA-2735: Expenses: 1 16320.1
- C-ELV-CCTV-2705: Expenses: 1 8161.35
- C-ELV-CCTV-2745: Expenses: 1 2769.38
- C-ELV-CCTV-2715: Expenses: 1 19043.1
- C-ELV-CCTV-2735: Expenses: 1 7322.52
- C-ELV-CCTV-2725: Expenses: 1 183699
- C-ELV-CS-2705: Expenses: 1 32708.4
- C-ELV-CS-2745: Expenses: 1 2769.38
- C-ELV-CS-2715: Expenses: 1 98125.2
- C-ELV-CS-2725: Expenses: 1 93342.5
- C-ELV-CS-2735: Expenses: 1 223315

| ID | WBS | Activity | Duration | Start | Finish | Predecessors | Total float | Free float | Cost | AREA |
| --- | --- | --- | --- | --- | --- | --- | --- | --- | --- | --- |
|  | 4 | **IP, SMATV & QAM Television System** |  | 2016-01-05 | 2016-05-11 |  |  |  |  |  |
| C-ELV-SMATV-2705 |  | Installation of SMATV first Fix Conduits, Boxes within block work , Gypsum Boards & Raised FLooring at Basement 2 | 20d | 2016-01-05 | 2016-01-27 | C-F-P-1633, C-F-P-1623, SD-CS-B3-792 | 52d | 5d | 4,452.18 | GEN |
| C-ELV-SMATV-2745 |  | Installation of Cable Trays & Truncking at Basement 2 | 25d | 2016-02-09 | 2016-03-09 | C-ELV-CCTV-2745 SS+5d | 15d | 0d | 2,769.38 |  |
| C-ELV-SMATV-2715 |  | Installation of second fix (Cabling & Wirring etc..) at Basement 2 | 16d | 2016-03-10 | 2016-03-28 | C-ELV-SMATV-2705, C-ELV-SMATV-2745 | 17d | 0d | 10,388.41 | GEN |
| C-ELV-SMATV-2725 |  | Installation & Connection of Outlets, switches and splitter at Basement 2 | 18d | 2016-03-29 | 2016-04-18 | C-ELV-SMATV-2715 | 17d | 0d | 6,537.45 | GEN |
| C-ELV-SMATV-2735 |  | Installtion & Connection of SMATV & QAM fiber & receiver at Basement 2 | 20d | 2016-04-19 | 2016-05-11 | C-ELV-SMATV-2725 | 223d | 156d | 2,419.21 |  |
|  | 5 | **BMS system** |  | 2016-01-05 | 2016-05-14 |  |  |  |  |  |
| C-MEP-BMS-2705 |  | Installation of BMS first Fix Conduits, Boxes within block work , Gypsum Boards & Raised FLooring at Basement 2 | 20d | 2016-01-05 | 2016-01-27 | C-F-P-1633, C-F-P-1623, SD-CS-B3-552 | 50d | 5d | 8,895.95 | GEN |
| C-MEP-BMS-2745 |  | Installation of Cable trays & Trunking at Basement 2 | 20d | 2016-02-16 | 2016-03-09 | C-ELV-SMATV-2745 SS+5d | 15d | 0d |  |  |
| C-MEP-BMS-2715 |  | Installation of BMS Cabling & Wirring at Basement 2 | 16d | 2016-03-10 | 2016-03-28 | C-MEP-BMS-2705, C-MEP-BMS-2745 | 15d | 0d | 11,861.27 | GEN |
| C-MEP-BMS-2725 |  | Installation & Connection of BMS Sensors, Relays, & Valves at Basement 2 | 20d | 2016-03-29 | 2016-04-20 | C-MEP-BMS-2715, C-MEP-PD-2735, C-MEP-PD-2725, C-MEP-FF-2174, C-MEP-AC-4388, C-MEP-AC-4368, C-MEP-AC-4378 | 15d | 0d | 14,826.58 | GEN |
| C-MEP-BMS-2735 |  | Installtion & Connection of BMS Racks, Panels etc...at Basement 2 | 20d | 2016-04-21 | 2016-05-14 | C-MEP-BMS-2725 | 286d | 127d | 14,826.58 |  |
|  | 6 | **Gas System** |  | 2016-02-14 | 2016-03-30 |  |  |  |  |  |
| C-MEP-Gas-2805 |  | Installation & testing of Gas Pipes & Supports at Basement 2 | 20d | 2016-02-14 | 2016-03-07 | C-MEP-PD-2735, C-MEP-PD-2725 | 6d | 0d | 4,994.14 | GEN |
| C-MEP-Gas-2845 |  | Installation & testing of Gas Valves at Basement 2 | 20d | 2016-03-08 | 2016-03-30 | C-MEP-Gas-2805 | 6d | 0d | 3,329.43 |  |
|  | 1 | **MEP - Basement 1** |  | 2015-12-16 | 2016-10-29 |  |  |  |  |  |
|  | 1 | **Electrical** |  | 2016-01-16 | 2016-10-29 |  |  |  |  |  |
| C-MEP-E-3306 |  | Installation of first Electrical Fix Conduits, Boxes within block work & Gypsum Boards at Basement 1 | 20d | 2016-01-16 | 2016-02-07 | C-F-P-1653, C-MEP-E-3246 | 26d | 14d | 66,042.69 | GEN |
| C-MEP-E-3356 |  | Installation of Cable Trays & Truncking at Basement 1 | 18d | 2016-02-03 | 2016-02-24 | C-MEP-FF-2204 SS+10d, C-MEP-PD-2755 SS+5d, C-MEP-E-3296 SS | 12d | 0d | 69,234.28 |  |
| C-MEP-E-3316 |  | Installation of Electrical Second Fix (Cabling & Wirring etc..). at Basement 1 | 18d | 2016-02-25 | 2016-03-16 | C-MEP-E-3306, C-MEP-E-3356, C-MEP-E-3256 SS | 12d | 0d | 1,085,904.92 | GEN |
| C-MEP-E-3326 |  | Installation & Connection of Electrical DB's, SMDB's at Basement 1 | 16d | 2016-03-17 | 2016-04-04 | C-MEP-E-3316, C-MEP-E-3266 SS | 12d | 0d | 145,700.58 | GEN |
| C-MEP-E-3346 |  | Installation & Connection of Lighting Fixtures & Socket at Basement 1 | 14d | 2016-10-13 | 2016-10-29 | C-MEP-E-3316, C-F-CF-3887, C-F-CF-3877, C-F-WF-2214, C-F-WF-2224, C-MEP-E-3286, C-MEP-E-3286 FF | 181d |  | 85,916.8 | GEN |
|  | 2 | **HVAC** |  | 2015-12-16 | 2016-10-12 |  |  |  |  |  |
| C-MEP-AC-4408 |  | Installation of Ductwork, Insulation & Dampers at Basement 1 | 25d | 2015-12-16 | 2016-01-14 | C-F-P-1653 SS, SD-CS-B2-172 | 33d | 0d | 207,402.82 | GEN |
| C-MEP-AC-4428 |  | Installation of Chilled Water Pipes & Valves at Basement 1 | 25d | 2015-12-29 | 2016-01-26 | C-MEP-AC-4408 SS+10d | 80d | 0d | 47,430.4 | GEN |
| C-MEP-AC-4468 |  | Installation of HVAC equipments AHU's, FCU's, ERU's, VAV's, CAV's & Fans at Basement 1 | 25d | 2016-01-12 | 2016-02-09 | C-MEP-AC-4458 FF, C-MEP-AC-4448 FF, C-MEP-AC-4408 SS | 80d | 60d | 810,500.21 | GEN |
| C-MEP-AC-4458 |  | Pressure testing of Ductwork at Basement 1 | 8d | 2016-01-16 | 2016-01-24 | C-MEP-AC-4408 | 94d | 0d |  | GEN |
| C-MEP-AC-4418 |  | Installation of Silencers, Attenuators, Isolators & Detectors at Basement 1 | 12d | 2016-01-25 | 2016-02-07 | C-MEP-AC-4458 | 102d | 82d | 41,704.9 | GEN |
| C-MEP-AC-4448 |  | Pressure testing & Insulation of Chilled Water Pipes at Basement 1 | 12d | 2016-01-27 | 2016-02-09 | C-MEP-AC-4428 | 80d | 0d | 8,821.1 | GEN |
| C-MEP-AC-4438 |  | Installation of Chilled Water Pipes Control Devices & Isolator at Basement 1 | 8d | 2016-02-11 | 2016-02-20 | C-MEP-AC-4448 | 92d | 72d | 2,889.38 | GEN |
| C-MEP-AC-4478 |  | Installation of Grilles, Diffusers & Controller at Basement 1 | 12d | 2016-09-29 | 2016-10-12 | C-MEP-AC-4468, C-F-CF-3887, C-F-CF-3877, C-F-WF-2224 FF, C-F-CF-3877 FF, C-F-WF-2214 FF, C-MEP-AC-4398 SS | 130d | 115d | 88,688.53 | GEN |

Notes:
- C-ELV-SMATV-2705: Expenses: 1 4452.18
- C-ELV-SMATV-2745: Expenses: 1 2769.38
- C-ELV-SMATV-2715: Expenses: 1 10388.4
- C-ELV-SMATV-2725: Expenses: 1 6537.45
- C-ELV-SMATV-2735: Expenses: 1 2419.21
- C-MEP-BMS-2705: Expenses: 1 8895.95
- C-MEP-BMS-2715: Expenses: 1 11861.3
- C-MEP-BMS-2725: Expenses: 1 14826.6
- C-MEP-BMS-2735: Expenses: 1 14826.6
- C-MEP-Gas-2805: Expenses: 1 4994.14
- C-MEP-Gas-2845: Expenses: 1 3329.43
- C-MEP-E-3306: Expenses: 1 66042.7
- C-MEP-E-3356: Expenses: 1 69234.3
- C-MEP-E-3316: Expenses: 1 927402; 2 158502
- C-MEP-E-3326: Expenses: 1 145701
- C-MEP-E-3346: Expenses: 1 85916.8
- C-MEP-AC-4408: Expenses: 1 207403
- C-MEP-AC-4428: Expenses: 1 47430.4
- C-MEP-AC-4468: Expenses: 1 810500
- C-MEP-AC-4418: Expenses: 1 41704.9
- C-MEP-AC-4448: Expenses: 1 8821.1
- C-MEP-AC-4438: Expenses: 1 2889.38
- C-MEP-AC-4478: Expenses: 1 88688.5

| ID | WBS | Activity | Duration | Start | Finish | Predecessors | Total float | Free float | Cost | AREA |
| --- | --- | --- | --- | --- | --- | --- | --- | --- | --- | --- |
|  | 3 | **Fire Fighting** |  | 2015-12-29 | 2016-06-28 |  |  |  |  |  |
| C-MEP-FF-2204 |  | Installation of FIre fighting Pipes at Basement 1 | 25d | 2015-12-29 | 2016-01-26 | C-MEP-AC-4408 SS+10d, SD-CS-B2-192 | 33d | 0d | 93,467.79 | GEN |
| C-MEP-FF-2224 |  | Pressure testing of fire fighting pipes at Basement 1 | 8d | 2016-01-27 | 2016-02-04 | C-MEP-FF-2204 | 52d | 0d | 5,280.67 | GEN |
| C-MEP-FF-2214 |  | Installation of fire Fighting Valves at Basement 1 | 20d | 2016-02-06 | 2016-02-29 | C-MEP-FF-2224 | 64d | 44d | 33,655.35 | GEN |
| C-MEP-FF-2234 |  | Installation of Fire Fighting Sprinklers & Fire hose Cabinets & Extinguishers at Basement 1 | 14d | 2016-06-13 | 2016-06-28 | C-MEP-FF-2214, C-F-CF-3877, C-F-CF-3867, C-MEP-FF-2224 | 84d | 0d | 117,330.78 | GEN |
|  | 4 | **Plumbing & Drainage** |  | 2016-01-28 | 2016-10-06 |  |  |  |  |  |
| C-MEP-PD-2755 |  | Installation of Water Pipes & Valves (Hot & Cold atc..) at Basement 1 | 20d | 2016-01-28 | 2016-02-21 | C-MEP-FF-2204 SS, C-F-P-1663, SD-CS-B2-232 | 12d | 0d | 169,453.32 | GEN |
| C-MEP-PD-2765 |  | Installation drainage Pipes at Basement 1 | 25d | 2016-01-28 | 2016-02-27 | C-MEP-PD-2755 SS | 26d | 0d | 58,460.13 | GEN |
| C-MEP-PD-2775 |  | Pressure testing & Insullation of water pipes at Basement 1 | 8d | 2016-02-22 | 2016-03-01 | C-MEP-PD-2755 | 31d | 25d | 9,573.63 | GEN |
| C-MEP-PD-2785 |  | Pressure testing of drainage pipes at Basement 1 | 8d | 2016-02-28 | 2016-03-07 | C-MEP-PD-2765 | 26d | 20d | 1,651.42 | GEN |
| C-MEP-PD-2795 |  | Installation of Outlets, Drains, Gullies, Cowls, & Clean out at Basement 1 | 20d | 2016-09-13 | 2016-10-06 | C-MEP-PD-2775, C-MEP-PD-2775 FF, C-F-FF-2214, C-F-WF-2214, C-F-FF-2214 FF, C-F-WF-2234, C-F-WF-2214 FF, C-F-DW-2214, C-MEP-PD-2745 | 135d | 120d | 23,962.64 | GEN |
|  | 5 | **BMS system** |  | 2016-01-28 | 2016-06-06 |  |  |  |  |  |
| C-MEP-BMS-2755 |  | Installation of BMS first Fix Conduits, Boxes within block work , Gypsum Boards & Raised FLooring at Basement 1 | 20d | 2016-01-28 | 2016-02-21 | C-F-P-1663, C-F-P-1653, SD-CS-B2-372 | 55d | 10d | 8,895.95 | GEN |
| C-MEP-BMS-2795 |  | Installation of Cable trays & Trunking at Basement 1 | 20d | 2016-03-10 | 2016-04-02 | C-ELV-SMATV-2795 SS+5d | 20d | 0d |  |  |
| C-MEP-BMS-2765 |  | Installation of BMS Cabling & Wirring at Basement 1 | 16d | 2016-04-03 | 2016-04-20 | C-MEP-BMS-2755, C-MEP-BMS-2795 | 20d | 0d | 11,861.27 | GEN |
| C-MEP-BMS-2775 |  | Installation & Connection of BMS Sensors, Relays, & Valves at Basement 1 | 20d | 2016-04-21 | 2016-05-14 | C-MEP-BMS-2765, C-MEP-PD-2785, C-MEP-PD-2775, C-MEP-FF-2214, C-MEP-AC-4468, C-MEP-AC-4448, C-MEP-AC-4458 | 20d | 0d | 14,826.58 | GEN |
| C-MEP-BMS-2785 |  | Installtion & Connection of BMS Racks, Panels etc... at Basement 1 | 20d | 2016-05-15 | 2016-06-06 | C-MEP-BMS-2775 | 282d | 123d | 14,826.58 |  |
|  | 7 | **ELV systems** |  | 2016-01-28 | 2016-06-05 |  |  |  |  |  |
|  | 1 | **Room Management System** |  | 2016-01-28 | 2016-05-30 |  |  |  |  |  |
| C-ELV-RMS-2755 |  | Installation of RMS first fix (Conduits, Boxes within block work , Gypsum Boards & Raised FLooring at Basement 1 | 20d | 2016-01-28 | 2016-02-21 | C-F-P-1663, C-F-P-1653, SD-CS-B2-412, SD-CS-B2-432 | 41d | 10d | 11,902.78 | GEN |
| C-ELV-RMS-2795 |  | Installation of Cable Trays & Truncking at Basement 1 | 25d | 2016-02-09 | 2016-03-09 | C-ELV-CS-2795 SS+5d | 20d | 0d | 2,769.38 |  |
| C-ELV-RMS-2765 |  | Installation of second fix (Cabling & Wirring etc..) at Basement 1 | 25d | 2016-03-10 | 2016-04-07 | C-ELV-RMS-2755, C-ELV-RMS-2795 | 26d | 0d | 11,902.78 | GEN |
| C-ELV-RMS-2775 |  | Installation & Connection of ethernets & HVAC thermostates etc.. at Basement 1 | 25d | 2016-04-09 | 2016-05-07 | C-ELV-RMS-2765 | 26d | 0d | 27,773.16 | GEN |
| C-ELV-RMS-2785 |  | Installtion & Connection of Panels, Controller, switches, server etc..) at Basement 1 | 20d | 2016-05-08 | 2016-05-30 | C-ELV-RMS-2775 | 223d | 156d | 27,773.16 |  |

Notes:
- C-MEP-FF-2204: Expenses: 1 93467.8
- C-MEP-FF-2224: Expenses: 1 5280.67
- C-MEP-FF-2214: Expenses: 1 33655.3
- C-MEP-FF-2234: Expenses: 1 117331
- C-MEP-PD-2755: Expenses: 1 169453
- C-MEP-PD-2765: Expenses: 1 58460.1
- C-MEP-PD-2775: Expenses: 1 9573.63
- C-MEP-PD-2785: Expenses: 1 1651.42
- C-MEP-PD-2795: Expenses: 1 23962.6
- C-MEP-BMS-2755: Expenses: 1 8895.95
- C-MEP-BMS-2765: Expenses: 1 11861.3
- C-MEP-BMS-2775: Expenses: 1 14826.6
- C-MEP-BMS-2785: Expenses: 1 14826.6
- C-ELV-RMS-2755: Expenses: 1 11902.8
- C-ELV-RMS-2795: Expenses: 1 2769.38
- C-ELV-RMS-2765: Expenses: 1 11902.8
- C-ELV-RMS-2775: Expenses: 1 27773.2
- C-ELV-RMS-2785: Expenses: 1 27773.2

| ID | WBS | Activity | Duration | Start | Finish | Predecessors | Total float | Free float | Cost | AREA |
| --- | --- | --- | --- | --- | --- | --- | --- | --- | --- | --- |
|  | 12 | **Fire Alarm & Detection System** |  | 2016-01-28 | 2016-06-05 |  |  |  |  |  |
| C-ELV-FA-2755 |  | Installation of FA first Fix Conduits, Boxes within block work , Gypsum Boards & Raised FLooring at Basement 1 | 20d | 2016-01-28 | 2016-02-21 | C-F-P-1663, C-F-P-1653, SD-CS-B2-452 | 46d | 10d | 13,660.92 | GEN |
| C-ELV-FA-2795 |  | Installation of Cable Trays & Truncking at Basement 1 | 25d | 2016-02-22 | 2016-03-21 | C-ELV-MSPA-2795 SS+5d | 20d | 0d | 2,769.38 |  |
| C-ELV-FA-2765 |  | Installation of second fix (Cabling & Wirring etc..) at Basement 1 | 20d | 2016-03-22 | 2016-04-13 | C-ELV-FA-2755, C-ELV-FA-2795 | 21d | 0d | 22,768.2 | GEN |
| C-ELV-FA-2775 |  | Installation & Connection of heat detector, smoke detector, flame detector etc.. at Basement 1 | 25d | 2016-04-14 | 2016-05-12 | C-ELV-FA-2765 | 21d | 0d | 27,321.84 | GEN |
| C-ELV-FA-2785 |  | Installtion & Connection of Racks & Panels at Basement 1 | 20d | 2016-05-14 | 2016-06-05 | C-ELV-FA-2775 | 218d | 151d | 27,321.84 |  |
|  | 2 | **Music System & Public Address System** |  | 2016-01-28 | 2016-06-05 |  |  |  |  |  |
| C-ELV-MSPA-2755 |  | Installation of MS/PA first fix (Conduits, Boxes within block work, Gypsum Boards & Raised FLooring) at Basement 1 | 20d | 2016-01-28 | 2016-02-21 | C-F-P-1663, C-F-P-1653 | 41d | 10d | 6,994.34 | GEN |
| C-ELV-MSPA-2795 |  | Installation of Cable Trays & Truncking at Basement 1 | 25d | 2016-02-16 | 2016-03-15 | C-ELV-RMS-2795 SS+5d | 20d | 0d | 2,769.38 |  |
| C-ELV-MSPA-2765 |  | Installation of second fix (Cabling & Wirring etc..) at Basement 1 | 25d | 2016-03-16 | 2016-04-13 | C-ELV-MSPA-2755, C-ELV-MSPA-2795 | 21d | 0d | 6,994.34 | GEN |
| C-ELV-MSPA-2775 |  | Installation & Connection of speakers, Amplifier & Controller at Basement 1 | 25d | 2016-04-14 | 2016-05-12 | C-ELV-MSPA-2765 | 21d | 0d | 16,320.12 | GEN |
| C-ELV-MSPA-2785 |  | Installtion & Connection of Media hub, panels and processor at Basement 1 | 20d | 2016-05-14 | 2016-06-05 | C-ELV-MSPA-2775 | 218d | 151d | 16,320.12 |  |
|  | 3 | **IP CCTV & Access Control System** |  | 2016-01-28 | 2016-05-10 |  |  |  |  |  |
| C-ELV-CCTV-2755 |  | Installation of CCTV first Fix Conduits, Boxes within block work, Gypsum Boards & Raised FLooring) at Basement 1 | 20d | 2016-01-28 | 2016-02-21 | C-F-P-1663, C-F-P-1653 | 53d | 10d | 8,161.35 | GEN |
| C-ELV-CCTV-2795 |  | Installation of Cable Trays & Truncking at Basement 1 | 25d | 2016-02-28 | 2016-03-27 | C-ELV-FA-2795 SS+5d | 20d | 0d | 2,769.38 |  |
| C-ELV-CCTV-2765 |  | Installation of second fix (Cabling & Wirring etc..) at Basement 1 | 20d | 2016-03-28 | 2016-04-19 | C-ELV-CCTV-2755, C-ELV-CCTV-2795 | 23d | 0d | 19,043.14 | GEN |
| C-ELV-CCTV-2785 |  | Installtion & Connection of Racks, Panels etc... at Basement 1 | 25d | 2016-04-12 | 2016-05-10 | C-ELV-CCTV-2775 FF | 240d | 173d | 7,322.52 |  |
| C-ELV-CCTV-2775 |  | Installation & Connection of Camera's & Alarms at Basement 1 | 18d | 2016-04-20 | 2016-05-10 | C-ELV-CCTV-2765 | 23d | 0d | 183,698.91 | GEN |
|  | 7 | **Communication System** |  | 2016-01-28 | 2016-05-18 |  |  |  |  |  |
| C-ELV-CS-2755 |  | Installation of CS first fix (Conduits, Boxes within block work, Gypsum Boards & Raised FLooring at Basement 1 | 20d | 2016-01-28 | 2016-02-21 | C-F-P-1663, C-F-P-1653, SD-CS-B2-392 | 46d | 10d | 32,708.4 | GEN |
| C-ELV-CS-2795 |  | Installation of Cable Trays & Truncking at Basement 1 | 25d | 2016-02-03 | 2016-03-03 | C-MEP-E-3356 SS | 20d | 0d | 2,769.38 |  |
| C-ELV-CS-2765 |  | Installation of second fix (Cabling & Wirring etc..) at Basement 1 | 25d | 2016-03-05 | 2016-04-02 | C-ELV-CS-2755, C-ELV-CS-2795 | 36d | 0d | 98,125.21 | GEN |
| C-ELV-CS-2775 |  | Installation & Connection of Wireless Access points & IP dect phone & RJ 45 at Basement 1 | 20d | 2016-04-03 | 2016-04-25 | C-ELV-CS-2765 | 36d | 0d | 93,342.54 | GEN |
| C-ELV-CS-2785 |  | Installtion & Connection of Controller & Instrumentation at Basement 1 | 20d | 2016-04-26 | 2016-05-18 | C-ELV-CS-2775 | 233d | 166d | 223,314.69 |  |

Notes:
- C-ELV-FA-2755: Expenses: 1 13660.9
- C-ELV-FA-2795: Expenses: 1 2769.38
- C-ELV-FA-2765: Expenses: 1 22768.2
- C-ELV-FA-2775: Expenses: 1 27321.8
- C-ELV-FA-2785: Expenses: 1 27321.8
- C-ELV-MSPA-2755: Expenses: 1 6994.34
- C-ELV-MSPA-2795: Expenses: 1 2769.38
- C-ELV-MSPA-2765: Expenses: 1 6994.34
- C-ELV-MSPA-2775: Expenses: 1 16320.1
- C-ELV-MSPA-2785: Expenses: 1 16320.1
- C-ELV-CCTV-2755: Expenses: 1 8161.35
- C-ELV-CCTV-2795: Expenses: 1 2769.38
- C-ELV-CCTV-2765: Expenses: 1 19043.1
- C-ELV-CCTV-2785: Expenses: 1 7322.52
- C-ELV-CCTV-2775: Expenses: 1 183699
- C-ELV-CS-2755: Expenses: 1 32708.4
- C-ELV-CS-2795: Expenses: 1 2769.38
- C-ELV-CS-2765: Expenses: 1 98125.2
- C-ELV-CS-2775: Expenses: 1 93342.5
- C-ELV-CS-2785: Expenses: 1 223315

| ID | WBS | Activity | Duration | Start | Finish | Predecessors | Total float | Free float | Cost | AREA |
| --- | --- | --- | --- | --- | --- | --- | --- | --- | --- | --- |
|  | 4 | **IP, SMATV & QAM Television System** |  | 2016-01-28 | 2016-06-04 |  |  |  |  |  |
| C-ELV-SMATV-2755 |  | Installation of SMATV first Fix Conduits, Boxes within block work , Gypsum Boards & Raised FLooring at Basement 1 | 20d | 2016-01-28 | 2016-02-21 | C-F-P-1663, C-F-P-1653, SD-CS-B2-492 | 57d | 10d | 4,452.18 | GEN |
| C-ELV-SMATV-2795 |  | Installation of Cable Trays & Truncking at Basement 1 | 25d | 2016-03-05 | 2016-04-02 | C-ELV-CCTV-2795 SS+5d | 20d | 0d | 2,769.38 |  |
| C-ELV-SMATV-2765 |  | Installation of second fix (Cabling & Wirring etc..) at Basement 1 | 16d | 2016-04-03 | 2016-04-20 | C-ELV-SMATV-2755, C-ELV-SMATV-2795 | 22d | 0d | 10,388.41 | GEN |
| C-ELV-SMATV-2775 |  | Installation & Connection of Outlets, switches and splitter at Basement 1 | 18d | 2016-04-21 | 2016-05-11 | C-ELV-SMATV-2765 | 22d | 0d | 6,537.45 | GEN |
| C-ELV-SMATV-2785 |  | Installtion & Connection of SMATV & QAM fiber & receiver at Basement 1 | 20d | 2016-05-12 | 2016-06-04 | C-ELV-SMATV-2775 | 219d | 152d | 2,419.21 |  |
|  | 6 | **Gas System** |  | 2016-03-31 | 2016-05-16 |  |  |  |  |  |
| C-MEP-Gas-2855 |  | Installation & testing of Gas Pipes & Supports at Basement 1 | 20d | 2016-03-31 | 2016-04-23 | C-MEP-FF-2224, C-MEP-PD-2775, C-MEP-PD-2785, C-MEP-Gas-2845 | 6d | 0d | 4,994.14 | GEN |
| C-MEP-Gas-2865 |  | Installation & testing of Gas Valves at Basement 1 | 20d | 2016-04-24 | 2016-05-16 | C-MEP-Gas-2855 | 6d | 0d | 3,329.43 |  |
|  | 2 | **Connections & Pre-testing of Utilities within the floor to the Risers /Shafts** |  | 2016-02-18 | 2016-12-26 |  |  |  |  |  |
|  | 8 | **Basement 3 - Utilities Connections & Pre-testing** |  | 2016-02-18 | 2016-11-17 |  |  |  |  |  |
| A5070 |  | Electrical Connection & Pre-testing - Floor Services to Risers at Basement 3 | 16d | 2016-02-18 | 2016-03-07 | C-MEP-E-3206, C-MEP-E-3196, C-E-SR-B3G-02, C-E-SR-B3G-03, C-E-CT-001 | 36d | 8d |  |  |
| A5090 |  | Plumbing & Drainage Connections & Pre-testing - Floor Services to Risers at Basement 3 | 25d | 2016-03-29 | 2016-04-26 | C-MEP-PD-2685, C-MEP-PD-2675, C-PW-CT-001, C-D-CT-001, C-PD-SR-B3G-11, C-PD-SR-B3G-21 | 113d | 0d |  |  |
| A5080 |  | HVAC Connection & Pre-testing - Floor Services to Risers at Basement 3 | 16d | 2016-05-08 | 2016-05-25 | C-HVAC-SR-B3G-4, C-HVAC-SR-B3G-02, C-MEP-AC-4258, C-MEP-AC-4308, C-MEP-AC-4278, C-HVAC-CT-001, C-UR-PR-2651, C-UR-PR-2681 | 61d | 0d |  |  |
| A5110 |  | Fire Fighting Connection & Pre-testing - Floor Services to Risers at Basement 3 | 16d | 2016-06-26 | 2016-07-17 | C-MEP-FF-2154, C-FF-CT-001, C-UR-PR-3021, C-FF-SR-B3G-11, C-FF-SR-B3G-02 | 56d | 0d |  |  |
| A5100 |  | BMS Connection & Pre-testing - Floor Services to Risers at Basement 3 | 16d | 2016-09-29 | 2016-10-17 | C-MEP-BMS-2685, C-ELV-SR-B3G-1692, C-UR-PR-2981 | 159d | 0d |  |  |
| A5120 |  | ELV Connection & Pre-testing - Floor Services to Risers at Basement 3 | 16d | 2016-10-31 | 2016-11-17 | C-ELV-SMATV-2685, C-ELV-CCTV-2685, C-ELV-FA-2685, C-ELV-MSPA-2685, C-ELV-RMS-2685, C-ELV-CS-2685, C-ELV-SR-B3G-02, C-UR-PR-2921, C-UR-PR-2931, C-UR-PR-3101, C-UR-PR-2881, C-UR-PR-2841 | 67d | 0d |  |  |
|  | 2 | **Basement 2 - Utilities Connections & Pre-testing** |  | 2016-03-17 | 2016-12-06 |  |  |  |  |  |
| A5140 |  | Electrical Connection & Pre-testing - Floor Services to Risers at Basement 2 | 16d | 2016-03-17 | 2016-04-04 | C-MEP-E-3266, C-E-CT-001, C-MEP-E-3316, C-E-SR-B3G-02, C-E-SR-B3G-03, A5070 | 28d | 16d |  |  |
| A5160 |  | Plumbing & Drainage Connections & Pre-testing - Floor Services to Risers at Basement 2 | 5d | 2016-04-27 | 2016-05-02 | C-MEP-PD-2735, C-MEP-PD-2725, C-PW-CT-001, C-D-CT-001, C-PD-SR-B3G-11, C-PD-SR-B3G-21, A5090 | 128d | 0d |  |  |
| A5150 |  | HVAC Connection & Pre-testing - Floor Services to Risers at Basement 2 | 16d | 2016-05-26 | 2016-06-13 | C-HVAC-SR-B3G-4, C-HVAC-SR-B3G-02, C-MEP-AC-4388, C-MEP-AC-4338, C-MEP-AC-4358, C-UR-PR-2651, A5080, C-UR-PR-2681 | 61d | 0d |  |  |
| A10470 |  | Gas Connection & Pre-testing - Floor Services to Risers at Basement 2 | 16d | 2016-06-15 | 2016-07-03 | C-MEP-Gas-2845, C-G-CT-001, C-UR-PR-3271 | 79d | 0d |  |  |
| A5180 |  | Fire Fighting Connection & Pre-testing - Floor Services to Risers at Basement 2 | 16d | 2016-07-18 | 2016-08-04 | C-MEP-FF-2194, A5110, C-FF-CT-001, C-UR-PR-3021, C-FF-SR-B3G-11, C-FF-SR-B3G-02 | 56d | 0d |  |  |
| A5170 |  | BMS Connection & Pre-testing - Floor Services to Risers at Basement 2 | 16d | 2016-10-18 | 2016-11-05 | C-MEP-BMS-2735, C-ELV-SR-B3G-1692, C-UR-PR-2981, A5100 | 159d | 0d |  |  |
| A5190 |  | ELV Connection & Pre-testing - Floor Services to Risers at Basement 2 | 16d | 2016-11-19 | 2016-12-06 | C-ELV-SMATV-2735, C-ELV-CCTV-2735, C-ELV-FA-2735, C-ELV-MSPA-2735, C-ELV-RMS-2735, C-ELV-CS-2735, C-ELV-SR-B3G-02, C-UR-PR-2931, C-UR-PR-3101, C-UR-PR-2881, C-UR-PR-2841, A5120 | 67d | 0d |  |  |

Notes:
- C-ELV-SMATV-2755: Expenses: 1 4452.18
- C-ELV-SMATV-2795: Expenses: 1 2769.38
- C-ELV-SMATV-2765: Expenses: 1 10388.4
- C-ELV-SMATV-2775: Expenses: 1 6537.45
- C-ELV-SMATV-2785: Expenses: 1 2419.21
- C-MEP-Gas-2855: Expenses: 1 4994.14
- C-MEP-Gas-2865: Expenses: 1 3329.43

| ID | WBS | Activity | Duration | Start | Finish | Predecessors | Total float | Free float | Cost |
| --- | --- | --- | --- | --- | --- | --- | --- | --- | --- |
|  | 1 | **Basement 1 - Utilities Connections & Pre-testing** |  | 2016-04-05 | 2016-12-26 |  |  |  |  |
| A5210 |  | Electrical Connection & Pre-testing - Floor Services to Risers at Basement 1 | 16d | 2016-04-05 | 2016-04-23 | C-MEP-E-3326, C-E-CT-001, C-E-SR-B3G-03, C-E-SR-B3G-02, A5140 SS | 12d | 0d |  |
| A5230 |  | Plumbing & Drainage Connections & Pre-testing - Floor Services to Risers at Basement 1 | 5d | 2016-05-03 | 2016-05-08 | C-MEP-PD-2785, C-MEP-PD-2775, C-PW-CT-001, C-D-CT-001, C-PD-SR-B3G-11, C-PD-SR-B3G-21, A5160 | 143d | 81d |  |
| A5220 |  | HVAC Connection & Pre-testing - Floor Services to Risers at Basement 1 | 16d | 2016-06-14 | 2016-07-02 | C-HVAC-SR-B3G-4, C-HVAC-SR-B3G-02, C-MEP-AC-4388, C-MEP-AC-4338, C-MEP-AC-4358, C-HVAC-CT-001, C-UR-PR-2651, A5150, C-UR-PR-2681 | 61d | 0d |  |
| A10490 |  | Gas Connection & Pre-testing - Floor Services to Risers at Basement 1 | 16d | 2016-07-04 | 2016-07-25 | C-G-CT-001, C-MEP-Gas-2865, C-UR-PR-3241, C-UR-PR-3271, A10470 | 79d | 0d |  |
| A5250 |  | Fire Fighting Connection & Pre-testing - Floor Services to Risers at Basement 1 | 16d | 2016-08-06 | 2016-08-23 | C-MEP-FF-2234, A5180, C-FF-CT-001, C-UR-PR-3021, C-FF-SR-B3G-02, C-FF-SR-B3G-11 | 56d | 0d |  |
| A5240 |  | BMS Connection & Pre-testing - Floor Services to Risers at Basement 1 | 16d | 2016-11-06 | 2016-11-23 | C-MEP-BMS-2785, C-ELV-SR-B3G-1692, C-UR-PR-2981, A5170 | 159d |  |  |
| A5260 |  | ELV Connection & Pre-testing - Floor Services to Risers at Basement 1 | 16d | 2016-12-07 | 2016-12-26 | C-ELV-SMATV-2785, C-ELV-CCTV-2785, C-ELV-FA-2785, C-ELV-MSPA-2785, C-ELV-RMS-2785, C-ELV-CS-2785, C-ELV-SR-B3G-02, C-UR-PR-2841, C-UR-PR-2881, C-UR-PR-3101, C-UR-PR-2931, C-UR-PR-2931 FF, A5190 | 67d | 49d |  |
|  | 1 | **MEP Works - Ground to Roof** |  | 2015-01-28 | 2017-03-21 |  |  |  |  |
|  | 1 | **MEP works - Embedded services within Concrete** |  | 2015-01-28 | 2016-03-30 |  |  |  |  |
| C-MEP-Em-32 |  | Embeded MEP services within MZ & Walls/Columns up to L1 | 4d | 2015-01-28 | 2015-02-01 | C-CS-S-MZ-01 SS, SD-CS-GF-212 | 3d |  | 35,387.41 |
| C-MEP-Em-42 |  | Embeded MEP services within L1 & Walls/Columns up to L2 | 4d | 2015-02-08 | 2015-02-12 | C-CS-S-L1-01 SS+2d, C-MEP-Em-32, SD-CS-L1-232 | 1d |  | 35,387.41 |
| C-MEP-Em-52 |  | Embeded MEP services within L2 & Walls/Columns up to L3 | 4d | 2015-02-23 | 2015-02-26 | C-CS-S-L2-2 SS, C-MEP-Em-42, SD-CS-L2-252 | 3d |  | 35,387.41 |
| C-MEP-Em-62 |  | Embeded MEP services within L3 & Walls/Columns up to L4 | 4d | 2015-03-05 | 2015-03-09 | C-CS-S-L3-22 SS+2d, C-MEP-Em-52, SD-CS-L3-272 | 1d |  | 35,387.41 |
| C-MEP-Em-71 |  | Embeded MEP services within L4 & Walls/Columns up to L5 | 4d | 2015-03-14 | 2015-03-17 | C-CS-S-L4-42 SS+2d, C-MEP-Em-62, SD-CS-L4-1292 | 1d |  | 35,387.41 |
| C-MEP-Em-72 |  | Embeded MEP services within L5 & Walls/Columns up to L6 | 4d | 2015-03-22 | 2015-03-25 | C-CS-S-L5-62 SS+2d, C-MEP-Em-71, SD-CS-L5-312 | 1d |  | 35,387.41 |
| C-MEP-Em-82 |  | Embeded MEP services within L6 & Walls/Columns up to L7 | 4d | 2015-03-30 | 2015-04-02 | C-CS-S-L6-2 SS+2d, C-MEP-Em-72, SD-CS-L6-332 | 1d |  | 35,387.41 |
| C-MEP-Em-92 |  | Embeded MEP services within L7 & Walls/Columns up to L8 | 4d | 2015-04-07 | 2015-04-11 | C-CS-S-L7-2 SS+2d, C-MEP-Em-82, SD-CS-L7-352 | 1d |  | 35,387.41 |
| C-MEP-Em-102 |  | Embeded MEP services within L8 & Walls/Columns up to L9 | 4d | 2015-04-15 | 2015-04-19 | C-CS-S-L8-22 SS+2d, C-MEP-Em-92, SD-CS-L8-372 | 1d |  | 35,387.41 |
| C-MEP-Em-112 |  | Embeded MEP services within L9 & Walls/Columns up to L10 | 4d | 2015-04-23 | 2015-04-27 | C-CS-S-L9-42 SS+2d, C-MEP-Em-102, SD-CS-L9-392 | 1d |  | 35,387.41 |
| C-MEP-Em-122 |  | Embeded MEP services within L10 & Walls/Columns up to L11 | 4d | 2015-05-02 | 2015-05-05 | C-CS-S-L10-62 SS+2d, C-MEP-Em-112, SD-CS-L10-412 | 1d |  | 35,387.41 |
| C-MEP-Em-132 |  | Embeded MEP services within L11 & Walls/Columns up to L12 | 4d | 2015-05-10 | 2015-05-13 | C-CS-S-L11-82 SS+2d, C-MEP-Em-122, SD-CS-L11-432 | 1d |  | 35,387.41 |
| C-MEP-Em-142 |  | Embeded MEP services within L12 & Walls/Columns up to L13 | 4d | 2015-05-18 | 2015-05-21 | C-CS-S-L12-22 SS+2d, C-MEP-Em-132, SD-CS-L12-452 | 1d |  | 35,387.41 |
| C-MEP-Em-152 |  | Embeded MEP services within L13 & Walls/Columns up to L14 | 4d | 2015-05-26 | 2015-05-30 | C-CS-S-L13-62 SS+2d, C-MEP-Em-142, SD-CS-L13-472 | 1d |  | 35,387.41 |
| C-MEP-Em-162 |  | Embeded MEP services within L14 & Walls/Columns up to L15 | 4d | 2015-06-03 | 2015-06-07 | C-CS-S-L14-82 SS+2d, C-MEP-Em-152, SD-CS-L14-492 | 1d |  | 35,387.41 |
| C-MEP-Em-172 |  | Embeded MEP services within L15 & Walls/Columns up to L16 | 4d | 2015-06-11 | 2015-06-15 | C-CS-S-L15-102 SS+2d, C-MEP-Em-162, SD-CS-L15-512 | 1d |  | 35,387.41 |
| C-MEP-Em-182 |  | Embeded MEP services within L16 & Walls/Columns up to L17 | 4d | 2015-06-20 | 2015-06-23 | C-CS-S-L16-22 SS+2d, C-MEP-Em-172, SD-CS-L16-532 | 1d |  | 35,387.41 |
| C-MEP-Em-192 |  | Embeded MEP services within L17 & Walls/Columns up to L18 | 4d | 2015-06-28 | 2015-07-01 | C-CS-S-L17-42 SS+2d, C-MEP-Em-182, SD-CS-L17-1312 | 1d |  | 35,387.41 |
| C-MEP-Em-202 |  | Embeded MEP services within L18 & Walls/Columns up to L19 | 4d | 2015-07-07 | 2015-07-11 | C-CS-S-L18-62 SS+2d, C-MEP-Em-192, SD-CS-L18-572 | 2d |  | 35,387.41 |
| C-MEP-Em-212 |  | Embeded MEP services within L19 & Walls/Columns up to L20 | 4d | 2015-07-19 | 2015-07-22 | C-CS-S-L19-82 SS+2d, C-MEP-Em-202, SD-CS-L19-592 | 1d |  | 35,387.41 |
| C-MEP-Em-222 |  | Embeded MEP services within L20 & Walls/Columns up to L21 | 4d | 2015-07-27 | 2015-07-30 | C-CS-S-L20-102 SS+2d, C-MEP-Em-212, SD-CS-L20-612 | 1d |  | 35,387.41 |
| C-MEP-Em-232 |  | Embeded MEP services within L21 & Walls/Columns up to L22 | 4d | 2015-08-04 | 2015-08-08 | C-CS-S-L21-122 SS+2d, C-MEP-Em-222, SD-CS-L21-632 | 1d |  | 35,387.41 |
| C-MEP-Em-242 |  | Embeded MEP services within L22 & Walls/Columns up to L23 | 4d | 2015-08-12 | 2015-08-16 | C-CS-S-L22-42 SS+2d, C-MEP-Em-232, SD-CS-L22-652 | 1d |  | 35,387.41 |
| C-MEP-Em-252 |  | Embeded MEP services within L23 & Walls/Columns up to L24 | 4d | 2015-08-20 | 2015-08-24 | C-CS-S-L23-2 SS+2d, C-MEP-Em-242, SD-CS-L23-672 | 0d |  | 35,387.41 |
| C-MEP-Em-253 |  | Embeded MEP services within L24 & Walls/Columns up to L25 | 4d | 2015-08-27 | 2015-08-31 | C-CS-S-L24-22 SS+2d, C-MEP-Em-252, SD-CS-L24-692 | 0d |  | 35,387.41 |
| C-MEP-Em-272 |  | Embeded MEP services within L25 & Walls/Columns up to L26 | 4d | 2015-09-03 | 2015-09-07 | C-CS-S-L25-42 SS+2d, C-MEP-Em-253, SD-CS-L25-712 | 0d |  | 35,387.41 |
| C-MEP-Em-282 |  | Embeded MEP services within L26 & Walls/Columns up to L27 | 4d | 2015-09-10 | 2015-09-14 | C-CS-S-L26-62 SS+2d, C-MEP-Em-272, SD-CS-L26-732 | 0d |  | 35,387.41 |
| C-MEP-Em-292 |  | Embeded MEP services within L27 & Walls/Columns up to L28 | 4d | 2015-09-17 | 2015-09-24 | C-CS-S-L27-82 SS+2d, C-MEP-Em-282, SD-CS-L27-752 | 0d |  | 35,387.41 |
| C-MEP-Em-302 |  | Embeded MEP services within L28 & Walls/Columns up to L29 | 4d | 2015-09-28 | 2015-10-01 | C-CS-S-L28-22 SS+2d, C-MEP-Em-292, SD-CS-L28-772 | 0d |  | 35,387.41 |
| C-MEP-Em-312 |  | Embeded MEP services within L29 & Walls/Columns up to L30 | 4d | 2015-10-05 | 2015-10-08 | C-CS-S-L29-22 SS+2d, C-MEP-Em-302, SD-CS-L29-792 | 0d |  | 35,387.41 |
| C-MEP-Em-322 |  | Embeded MEP services within L30 & Walls/Columns up to L31 | 4d | 2015-10-12 | 2015-10-15 | C-CS-S-L30-42 SS+2d, C-MEP-Em-312, SD-CS-L30-812 | 0d |  | 35,387.41 |
| C-MEP-Em-332 |  | Embeded MEP services within L31 & Walls/Columns up to L32 | 4d | 2015-10-19 | 2015-10-22 | C-CS-S-L31-62 SS+2d, C-MEP-Em-322, SD-CS-L31-832 | 0d |  | 35,387.41 |
| C-MEP-Em-342 |  | Embeded MEP services within L32 & Walls/Columns up to L33 | 4d | 2015-10-26 | 2015-10-29 | C-CS-S-L32-82 SS+2d, C-MEP-Em-332, SD-CS-L32-852 | 1d |  | 35,387.41 |
| C-MEP-Em-352 |  | Embeded MEP services within L33 & Walls/Columns up to L34 | 4d | 2015-11-04 | 2015-11-08 | C-CS-S-L33-102 SS+2d, C-MEP-Em-342, SD-CS-L33-872 | 1d |  | 35,387.41 |
| C-MEP-Em-362 |  | Embeded MEP services within L34 & Walls/Columns up to L35 | 4d | 2015-11-12 | 2015-11-16 | C-CS-S-L34-42 SS+2d, C-MEP-Em-352, SD-CS-L34-892 | 0d |  | 35,387.41 |
| C-MEP-Em-372 |  | Embeded MEP services within L35 & Walls/Columns up to L36 | 4d | 2015-11-19 | 2015-11-23 | C-CS-S-L35-82 SS+2d, C-MEP-Em-362, SD-CS-L35-912 | 0d |  | 35,387.41 |
| C-MEP-Em-382 |  | Embeded MEP services within L36 & Walls/Columns up to L37 | 4d | 2015-11-26 | 2015-11-30 | C-CS-S-L36-102 SS+2d, C-MEP-Em-372, SD-CS-L36-932 | 0d |  | 35,387.41 |
| C-MEP-Em-392 |  | Embeded MEP services within L37 & Walls/Columns up to L38 | 4d | 2015-12-03 | 2015-12-07 | C-CS-S-L37-122 SS+2d, C-MEP-Em-382, SD-CS-L37-952 | 0d |  | 35,387.41 |
| C-MEP-Em-402 |  | Embeded MEP services within L38 & Walls/Columns up to L39 | 4d | 2015-12-10 | 2015-12-14 | C-CS-S-L38-42 SS+2d, C-MEP-Em-392, SD-CS-L38-972 | 0d |  | 35,387.41 |
| C-MEP-Em-412 |  | Embeded MEP services within L39 & Walls/Columns up to L40 | 4d | 2015-12-17 | 2015-12-22 | C-CS-S-L39-62 SS+2d, C-MEP-Em-402, SD-CS-L39-992 | 0d |  | 35,387.41 |
| C-MEP-Em-422 |  | Embeded MEP services within L40 & Walls/Columns up to L41 | 4d | 2015-12-26 | 2015-12-29 | C-CS-S-L40-82 SS+2d, C-MEP-Em-412, SD-CS-L40-1012 | 0d |  | 35,387.41 |
| C-MEP-Em-432 |  | Embeded MEP services within L41 & Walls/Columns up to L42 | 4d | 2016-01-02 | 2016-01-05 | C-CS-S-L41-102 SS+2d, C-MEP-Em-422, SD-CS-L41-1032 | 0d |  | 35,387.41 |
| C-MEP-Em-442 |  | Embeded MEP services within L42 & Walls/Columns up to L43 | 4d | 2016-01-09 | 2016-01-12 | C-CS-S-L42-122 SS+2d, C-MEP-Em-432, SD-CS-L42-1052 | 0d |  | 35,387.41 |
| C-MEP-Em-452 |  | Embeded MEP services within L43 & Walls/Columns up to L44 | 4d | 2016-01-16 | 2016-01-19 | C-CS-S-L43-142 SS+2d, C-MEP-Em-442, SD-CS-L43-1072 | 0d |  | 35,387.41 |
| C-MEP-Em-462 |  | Embeded MEP services within L44 & Walls/Columns up to L45 | 4d | 2016-01-23 | 2016-01-26 | C-CS-S-L44-62 SS+2d, C-MEP-Em-452, SD-CS-L44-1092 | 0d |  | 35,387.41 |
| C-MEP-Em-472 |  | Embeded MEP services within L45 & Walls/Columns up to L46 | 4d | 2016-01-30 | 2016-02-02 | C-CS-S-L40-102 SS+2d, C-MEP-Em-462, SD-CS-L45-1112 | 0d |  | 35,387.41 |
| C-MEP-Em-482 |  | Embeded MEP services within L46 & Walls/Columns up to L47 | 4d | 2016-02-06 | 2016-02-09 | C-CS-S-L41-122 SS+2d, C-MEP-Em-472, SD-CS-L46-1132 | 0d |  | 35,387.41 |
| C-MEP-Em-492 |  | Embeded MEP services within L47 & Walls/Columns up to L48 | 4d | 2016-02-14 | 2016-02-17 | C-CS-S-L42-142 SS+2d, C-MEP-Em-482, SD-CS-L47-1152 | 0d |  | 35,387.41 |
| C-MEP-Em-502 |  | Embeded MEP services within L48 & Walls/Columns up to L49 | 4d | 2016-02-21 | 2016-02-24 | C-CS-S-L43-162 SS+2d, C-MEP-Em-492, SD-CS-L48-1172 | 0d |  | 35,387.41 |
| C-MEP-Em-512 |  | Embeded MEP services within L49 & Walls/Columns up to L50 | 4d | 2016-02-28 | 2016-03-02 | C-CS-S-L44-72 SS+2d, C-MEP-Em-502, SD-CS-L49-1192 | 0d |  | 35,387.41 |
| C-MEP-Em-522 |  | Embeded MEP services within L50 & Walls/Columns up to L51 | 4d | 2016-03-07 | 2016-03-10 | C-CS-S-L41-142 SS+2d, C-MEP-Em-512, SD-CS-L50-1212 | 0d |  | 35,387.41 |
| C-MEP-Em-532 |  | Embeded MEP services within L51 & Walls/Columns up to Roof | 4d | 2016-03-14 | 2016-03-17 | C-CS-S-L42-162 SS+2d, C-MEP-Em-522, SD-CS-L51-1572 | 1d |  | 35,387.41 |
| C-MEP-Em-542 |  | Embeded MEP services within Roof & Walls/Columns up to Upper Roof | 4d | 2016-03-21 | 2016-03-24 | C-CS-S-L43-182 SS+2d, C-MEP-Em-532, SD-CS-L51-1592 | 0d |  | 35,387.41 |
| C-MEP-Em-552 |  | Embeded MEP services within Upper roof | 4d | 2016-03-27 | 2016-03-30 | C-CS-S-L44-82 SS+1d, C-MEP-Em-542, SD-CS-L51-1612 | 2d |  | 35,387.41 |

Notes:
- C-MEP-Em-32: Expenses: 1 1632.26; 4 33755.2
- C-MEP-Em-42: Expenses: 1 1632.26; 4 33755.2
- C-MEP-Em-52: Expenses: 1 1632.26; 4 33755.2
- C-MEP-Em-62: Expenses: 1 1632.26; 4 33755.2
- C-MEP-Em-71: Expenses: 1 1632.26; 4 33755.2
- C-MEP-Em-72: Expenses: 1 1632.26; 4 33755.2
- C-MEP-Em-82: Expenses: 1 1632.26; 4 33755.2
- C-MEP-Em-92: Expenses: 1 1632.26; 4 33755.2
- C-MEP-Em-102: Expenses: 1 1632.26; 4 33755.2
- C-MEP-Em-112: Expenses: 1 1632.26; 4 33755.2
- C-MEP-Em-122: Expenses: 1 1632.26; 4 33755.2
- C-MEP-Em-132: Expenses: 1 1632.26; 4 33755.2
- C-MEP-Em-142: Expenses: 1 1632.26; 4 33755.2
- C-MEP-Em-152: Expenses: 1 1632.26; 4 33755.2
- C-MEP-Em-162: Expenses: 1 1632.26; 4 33755.2
- C-MEP-Em-172: Expenses: 1 1632.26; 4 33755.2
- C-MEP-Em-182: Expenses: 1 1632.26; 4 33755.2
- C-MEP-Em-192: Expenses: 1 1632.26; 4 33755.2
- C-MEP-Em-202: Expenses: 1 1632.26; 4 33755.2
- C-MEP-Em-212: Expenses: 1 1632.26; 4 33755.2
- C-MEP-Em-222: Expenses: 1 1632.26; 4 33755.2
- C-MEP-Em-232: Expenses: 1 1632.26; 4 33755.2
- C-MEP-Em-242: Expenses: 1 1632.26; 4 33755.2
- C-MEP-Em-252: Expenses: 1 1632.26; 4 33755.2
- C-MEP-Em-253: Expenses: 1 1632.26; 4 33755.2
- C-MEP-Em-272: Expenses: 1 1632.26; 4 33755.2
- C-MEP-Em-282: Expenses: 1 1632.26; 4 33755.2
- C-MEP-Em-292: Expenses: 1 1632.26; 4 33755.2
- C-MEP-Em-302: Expenses: 1 1632.26; 4 33755.2
- C-MEP-Em-312: Expenses: 1 1632.26; 4 33755.2
- C-MEP-Em-322: Expenses: 1 1632.26; 4 33755.2
- C-MEP-Em-332: Expenses: 1 1632.26; 4 33755.2
- C-MEP-Em-342: Expenses: 1 1632.26; 4 33755.2
- C-MEP-Em-352: Expenses: 1 1632.26; 4 33755.2
- C-MEP-Em-362: Expenses: 1 1632.26; 4 33755.2
- C-MEP-Em-372: Expenses: 1 1632.26; 4 33755.2
- C-MEP-Em-382: Expenses: 1 1632.26; 4 33755.2
- C-MEP-Em-392: Expenses: 1 1632.26; 4 33755.2
- C-MEP-Em-402: Expenses: 1 1632.26; 4 33755.2
- C-MEP-Em-412: Expenses: 1 1632.26; 4 33755.2
- C-MEP-Em-422: Expenses: 1 1632.26; 4 33755.2
- C-MEP-Em-432: Expenses: 1 1632.26; 4 33755.2
- C-MEP-Em-442: Expenses: 1 1632.26; 4 33755.2
- C-MEP-Em-452: Expenses: 1 1632.26; 4 33755.2
- C-MEP-Em-462: Expenses: 1 1632.26; 4 33755.2
- C-MEP-Em-472: Expenses: 1 1632.26; 4 33755.2
- C-MEP-Em-482: Expenses: 1 1632.26; 4 33755.2
- C-MEP-Em-492: Expenses: 1 1632.26; 4 33755.2
- C-MEP-Em-502: Expenses: 1 1632.26; 4 33755.2
- C-MEP-Em-512: Expenses: 1 1632.26; 4 33755.2
- C-MEP-Em-522: Expenses: 1 1632.26; 4 33755.2
- C-MEP-Em-532: Expenses: 1 1632.26; 4 33755.2
- C-MEP-Em-542: Expenses: 1 1632.26; 4 33755.2
- C-MEP-Em-552: Expenses: 1 1632.26; 4 33755.2

| ID | WBS | Activity | Duration | Start | Finish | Predecessors | Total float | Free float | Cost |
| --- | --- | --- | --- | --- | --- | --- | --- | --- | --- |
|  | 2 | **MEP Risers / Shafts** |  | 2015-10-27 | 2017-01-10 |  |  |  |  |
|  | 1 | **Ground to Level 5** |  | 2015-10-27 | 2016-05-22 |  |  |  |  |
|  | 7 | **Electrical** |  | 2015-10-27 | 2016-01-24 |  |  |  |  |
| C-E-SR-B3G-13 |  | Installation, Connection & testing of Bus Bars - Ground to Level 5 | 22d | 2015-10-27 | 2015-11-21 | C-E-SR-B3G-02 | 14d | 0d | 1,258,614.11 |
| C-E-SR-B3G-3 |  | Installation of Cable Trays - Ground to Level 5 | 23d | 2015-11-05 | 2015-12-01 | C-E-SR-B3G-01 SS | 5d | 0d | 34,617.14 |
| C-E-SR-B3G-23 |  | Installation of Cabling & Wirring - Ground to Level 5 | 20d | 2016-01-02 | 2016-01-24 | C-E-SR-B3G-3, C-E-SR-B3G-03 | 36d | 0d | 309,134.16 |
|  | 2 | **HVAC** |  | 2016-01-24 | 2016-05-04 |  |  |  |  |
| C-HVAC-SR-B3G-34 |  | Installation of Ductwork - Ground to Level 5 | 25d | 2016-01-24 | 2016-02-22 | C-HVAC-SR-B3G-01 | 47d | 0d | 176,292.4 |
| C-HVAC-SR-B3G-84 |  | Pressure testing of Ductwork - Ground to Level 5 | 20d | 2016-02-23 | 2016-03-16 | C-HVAC-SR-B3G-34, C-HVAC-SR-B3G-24 | 137d | 0d |  |
| C-HVAC-SR-B3G-54 |  | Installation of Chilled Water Pipes & Valves - Ground to Level 5 | 23d | 2016-03-02 | 2016-03-28 | C-HVAC-SR-B3G-03 | 33d | 0d | 126,481.06 |
| C-HVAC-SR-B3G-44 |  | Installation of Ductwork Insullation - Ground to Level 5 | 12d | 2016-03-17 | 2016-03-30 | C-HVAC-SR-B3G-84, C-HVAC-SR-B3G-02, P-MEP-AC-3763 | 137d | 3d | 31,110.42 |
| C-HVAC-SR-B3G-74 |  | Pressure testing & Insulation of Chilled Water Pipes - Ground to Level 5 | 20d | 2016-03-29 | 2016-04-20 | C-HVAC-SR-B3G-54, C-HVAC-SR-B3G-14 | 107d | 0d | 34,696.33 |
| C-HVAC-SR-B3G-64 |  | Installation of Chilled Water Pipes Control Devices & Isolator - Ground to Level 5 | 12d | 2016-04-21 | 2016-05-04 | C-HVAC-SR-B3G-74, C-HVAC-SR-B3G-4 | 107d | 0d | 11,364.89 |
|  | 3 | **Fire Fighting** |  | 2016-03-08 | 2016-05-22 |  |  |  |  |
| C-FF-SR-B3G-1271 |  | Installation of Fire Fighting Pipes - Ground to Level 5 | 25d | 2016-03-08 | 2016-04-05 | C-FF-SR-B3G-01 | 33d | 0d | 126,849.14 |
| C-FF-SR-B3G-1291 |  | Pressure testing of fire fighting pipes - Ground to Level 5 | 20d | 2016-04-06 | 2016-04-28 | C-FF-SR-B3G-1271, C-FF-SR-B3G-11 | 65d | 0d | 6,676.27 |
| C-FF-SR-B3G-1281 |  | Installation of fire FIghting Valves - Ground to Level 5 | 20d | 2016-04-30 | 2016-05-22 | C-FF-SR-B3G-1291, C-FF-SR-B3G-02 | 65d | 0d | 74,789.66 |
|  | 4 | **Plumbing & Drainage** |  | 2016-03-06 | 2016-04-14 |  |  |  |  |
| C-PD-SR-B3G-1281 |  | Installation of Water Pipes & Valves - Ground to Level 5 | 23d | 2016-03-06 | 2016-03-31 | C-PD-SR-B3G-01 | 31d | 0d | 229,972.36 |
| C-PD-SR-B3G-1291 |  | Installation Drainage Pipes - Ground to Level 5 | 23d | 2016-03-06 | 2016-03-31 | C-PD-SR-B3G-02 | 31d | 0d | 123,415.84 |
| C-PD-SR-B3G-1301 |  | Pressure teting & Insulation of water pipes - Ground to Level 5 | 12d | 2016-04-02 | 2016-04-14 | C-PD-SR-B3G-1281, C-PD-SR-B3G-11 | 103d | 0d | 12,103.81 |
| C-PD-SR-B3G-1311 |  | Pressure testing of drainage pipes - Ground to Level 5 | 12d | 2016-04-02 | 2016-04-14 | C-PD-SR-B3G-1291, C-PD-SR-B3G-21 | 103d | 0d | 6,495.57 |
|  | 5 | **ELV** |  | 2016-03-08 | 2016-04-28 |  |  |  |  |
| C-ELV-SR-B3G-1502 |  | Installation of Cable Trays - Ground to Level 5 | 25d | 2016-03-08 | 2016-04-05 | C-ELV-SR-B3G-01 | 50d | 0d | 24,509.01 |
| C-ELV-SR-B3G-1512 |  | Installation of Cabling & Wirring - Ground to Level 5 | 20d | 2016-04-06 | 2016-04-28 | C-ELV-SR-B3G-1502, C-ELV-SR-B3G-02 | 90d | 5d | 163,542.01 |

Notes:
- C-E-SR-B3G-13: Expenses: 1 1258614
- C-E-SR-B3G-3: Expenses: 1 34617.1
- C-E-SR-B3G-23: Expenses: 1 309134
- C-HVAC-SR-B3G-34: Expenses: 1 176292
- C-HVAC-SR-B3G-54: Expenses: 1 126481
- C-HVAC-SR-B3G-44: Expenses: 1 31110.4
- C-HVAC-SR-B3G-74: Expenses: 1 34696.3
- C-HVAC-SR-B3G-64: Expenses: 1 11364.9
- C-FF-SR-B3G-1271: Expenses: 1 126849
- C-FF-SR-B3G-1291: Expenses: 1 6676.27
- C-FF-SR-B3G-1281: Expenses: 1 74789.7
- C-PD-SR-B3G-1281: Expenses: 1 229972
- C-PD-SR-B3G-1291: Expenses: 1 123416
- C-PD-SR-B3G-1301: Expenses: 1 12103.8
- C-PD-SR-B3G-1311: Expenses: 1 6495.57
- C-ELV-SR-B3G-1502: Expenses: 1 24509
- C-ELV-SR-B3G-1512: Expenses: 1 163542

| ID | WBS | Activity | Duration | Start | Finish | Predecessors | Total float | Free float | Cost |
| --- | --- | --- | --- | --- | --- | --- | --- | --- | --- |
|  | 10 | **BMS** |  | 2016-03-08 | 2016-04-28 |  |  |  |  |
| C-ELV-SR-B3G-1702 |  | Installation of Cable Trays - Ground to Level 5 | 25d | 2016-03-08 | 2016-04-05 | C-ELV-SR-B3G-1682 | 15d | 0d | 15,745.83 |
| C-ELV-SR-B3G-1712 |  | Installation of Cabling & Wirring - Ground to Level 5 | 20d | 2016-04-06 | 2016-04-28 | C-ELV-SR-B3G-1702, C-ELV-SR-B3G-1692 | 55d | 5d | 36,740.28 |
|  | 1 | **Gas** |  | 2016-03-08 | 2016-04-28 |  |  |  |  |
| C-MEP-R-Gas-902 |  | Installation of Gas Pipes & Valves - Ground to Level 5 | 25d | 2016-03-08 | 2016-04-05 | C-MEP-R-Gas-1882 | 45d | 0d | 6,742.09 |
| C-MEP-Gas-1912 |  | Testing of Gas Pipe - Ground to Level 5 | 20d | 2016-04-06 | 2016-04-28 | C-MEP-R-Gas-902, C-MEP-R-Gas-1892 | 85d | 5d | 749.12 |
|  | 2 | **Level 6 to Level 11** |  | 2015-11-05 | 2016-06-14 |  |  |  |  |
|  | 7 | **Electrical** |  | 2015-11-05 | 2016-02-17 |  |  |  |  |
| C-E-SR-B3G-33 |  | Installation of Cable Trays - Level 6 to level 11 | 25d | 2015-11-05 | 2015-12-03 | C-E-SR-B3G-3 SS | 5d | 0d | 34,617.14 |
| C-E-SR-B3G-43 |  | Installation, Connection & testing of Bus Bars - Level 6 to level 11 | 22d | 2015-11-22 | 2015-12-16 | C-E-SR-B3G-13 | 14d | 0d | 1,258,614.11 |
| C-E-SR-B3G-53 |  | Installation of Cabling & Wirring - Level 6 to level 11 | 20d | 2016-01-25 | 2016-02-17 | C-E-SR-B3G-33, C-E-SR-B3G-23 | 36d | 0d | 309,134.16 |
|  | 2 | **HVAC** |  | 2016-02-23 | 2016-05-19 |  |  |  |  |
| C-HVAC-SR-B3G-94 |  | Installation of Ductwork - Level 6 to level 11 | 25d | 2016-02-23 | 2016-03-22 | C-HVAC-SR-B3G-34 | 47d | 0d | 176,292.4 |
| C-HVAC-SR-B3G-144 |  | Pressure testing of Ductwork - Level 6 to level 11 | 10d | 2016-03-23 | 2016-04-03 | C-HVAC-SR-B3G-94, C-HVAC-SR-B3G-84 | 134d | 0d |  |
| C-HVAC-SR-B3G-114 |  | Installation of Chilled Water Pipes & Valves - Level 6 to level 11 | 23d | 2016-03-29 | 2016-04-24 | C-HVAC-SR-B3G-54 | 33d | 0d | 126,481.06 |
| C-HVAC-SR-B3G-104 |  | Installation of Ductwork Insullation - Level 6 to level 11 | 12d | 2016-04-04 | 2016-04-17 | C-HVAC-SR-B3G-144, C-HVAC-SR-B3G-44 | 134d | 13d | 31,110.42 |
| C-HVAC-SR-B3G-134 |  | Pressure testing & Insulation of Chilled Water Pipes - Level 6 to level 11 | 10d | 2016-04-25 | 2016-05-05 | C-HVAC-SR-B3G-114, C-HVAC-SR-B3G-74 | 106d | 0d | 34,696.33 |
| C-HVAC-SR-B3G-124 |  | Installation of Chilled Water Pipes Control Devices & Isolator - Level 6 to level 11 | 12d | 2016-05-07 | 2016-05-19 | C-HVAC-SR-B3G-134, C-HVAC-SR-B3G-64 | 106d | 3d | 11,364.89 |
|  | 3 | **Fire Fighting** |  | 2016-04-06 | 2016-06-14 |  |  |  |  |
| C-FF-SR-B3G-1301 |  | Installation of Fire Fighting Pipes - Level 6 to level 11 | 25d | 2016-04-06 | 2016-05-04 | C-FF-SR-B3G-1271 | 33d | 0d | 126,849.14 |
| C-FF-SR-B3G-1321 |  | Pressure testing of fire fighting pipes - Level 6 to level 11 | 12d | 2016-05-05 | 2016-05-18 | C-FF-SR-B3G-1301, C-FF-SR-B3G-1291 | 68d | 3d | 6,676.27 |
| C-FF-SR-B3G-1311 |  | Installation of fire FIghting Valves - Level 6 to level 11 | 20d | 2016-05-23 | 2016-06-14 | C-FF-SR-B3G-1321, C-FF-SR-B3G-1281 | 65d | 2d | 74,789.66 |
|  | 4 | **Plumbing & Drainage** |  | 2016-04-02 | 2016-05-11 |  |  |  |  |
| C-PD-SR-B3G-1321 |  | Installation of Water Pipes & Valves - Level 6 to level 11 | 23d | 2016-04-02 | 2016-04-27 | C-PD-SR-B3G-1281 | 31d | 0d | 229,972.36 |
| C-PD-SR-B3G-1331 |  | Installation Drainage Pipes - Level 6 to level 11 | 23d | 2016-04-02 | 2016-04-27 | C-PD-SR-B3G-1291 | 31d | 0d | 123,415.84 |
| C-PD-SR-B3G-1341 |  | Pressure teting & Insulation of water pipes - Level 6 to level 11 | 12d | 2016-04-28 | 2016-05-11 | C-PD-SR-B3G-1321, C-PD-SR-B3G-1301 | 96d | 0d | 12,103.81 |
| C-PD-SR-B3G-1351 |  | Pressure testing of drainage pipes - Level 6 to level 11 | 12d | 2016-04-28 | 2016-05-11 | C-PD-SR-B3G-1331, C-PD-SR-B3G-1311 | 96d | 0d | 6,495.57 |

Notes:
- C-ELV-SR-B3G-1702: Expenses: 1 15745.8
- C-ELV-SR-B3G-1712: Expenses: 1 36740.3
- C-MEP-R-Gas-902: Expenses: 1 6742.09
- C-MEP-Gas-1912: Expenses: 1 749.12
- C-E-SR-B3G-33: Expenses: 1 34617.1
- C-E-SR-B3G-43: Expenses: 1 1258614
- C-E-SR-B3G-53: Expenses: 1 309134
- C-HVAC-SR-B3G-94: Expenses: 1 176292
- C-HVAC-SR-B3G-114: Expenses: 1 126481
- C-HVAC-SR-B3G-104: Expenses: 1 31110.4
- C-HVAC-SR-B3G-134: Expenses: 1 34696.3
- C-HVAC-SR-B3G-124: Expenses: 1 11364.9
- C-FF-SR-B3G-1301: Expenses: 1 126849
- C-FF-SR-B3G-1321: Expenses: 1 6676.27
- C-FF-SR-B3G-1311: Expenses: 1 74789.7
- C-PD-SR-B3G-1321: Expenses: 1 229972
- C-PD-SR-B3G-1331: Expenses: 1 123416
- C-PD-SR-B3G-1341: Expenses: 1 12103.8
- C-PD-SR-B3G-1351: Expenses: 1 6495.57

| ID | WBS | Activity | Duration | Start | Finish | Predecessors | Total float | Free float | Cost |
| --- | --- | --- | --- | --- | --- | --- | --- | --- | --- |
|  | 5 | **ELV** |  | 2016-04-06 | 2016-05-28 |  |  |  |  |
| C-ELV-SR-B3G-1522 |  | Installation of Cable Trays - Level 6 to level 11 | 25d | 2016-04-06 | 2016-05-04 | C-ELV-SR-B3G-1502 | 50d | 0d | 24,509.01 |
| C-ELV-SR-B3G-1532 |  | Installation of Cabling & Wirring - Level 6 to level 11 | 20d | 2016-05-05 | 2016-05-28 | C-ELV-SR-B3G-1522, C-ELV-SR-B3G-1512 | 85d | 5d | 163,542.01 |
|  | 10 | **BMS** |  | 2016-04-06 | 2016-05-28 |  |  |  |  |
| C-ELV-SR-B3G-1722 |  | Installation of Cable Trays - Level 6 to level 11 | 25d | 2016-04-06 | 2016-05-04 | C-ELV-SR-B3G-1702 | 15d | 0d | 15,745.83 |
| C-ELV-SR-B3G-1732 |  | Installation of Cabling & Wirring - Level 6 to level 11 | 20d | 2016-05-05 | 2016-05-28 | C-ELV-SR-B3G-1722, C-ELV-SR-B3G-1712 | 50d | 5d | 36,740.28 |
|  | 1 | **Gas** |  | 2016-04-06 | 2016-05-28 |  |  |  |  |
| C-MEP-R-Gas-1922 |  | Installation of Gas Pipes & Valves - Level 6 to level 11 | 25d | 2016-04-06 | 2016-05-04 | C-MEP-R-Gas-902 | 45d | 0d | 6,742.09 |
| C-MEP-Gas-1932 |  | Testing of Gas Pipe - Level 6 to level 11 | 20d | 2016-05-05 | 2016-05-28 | C-MEP-R-Gas-1922, C-MEP-Gas-1912 | 80d | 5d | 749.12 |
|  | 3 | **Level 12 to Level 17** |  | 2015-11-05 | 2016-07-13 |  |  |  |  |
|  | 7 | **Electrical** |  | 2015-11-05 | 2016-02-17 |  |  |  |  |
| C-E-SR-B3G-63 |  | Installation of Cable Trays - Level 12 to level 17 | 25d | 2015-11-05 | 2015-12-03 | C-E-SR-B3G-33 SS | 5d | 0d | 34,617.14 |
| C-E-SR-B3G-73 |  | Installation, Connection & testing of Bus Bars - Level 12 to level 17 | 22d | 2015-12-17 | 2016-01-12 | C-E-SR-B3G-43 | 14d | 0d | 1,258,614.11 |
| C-E-SR-B3G-83 |  | Installation of Cabling & Wirring - Level 12 to level 17 | 20d | 2016-01-25 | 2016-02-17 | C-E-SR-B3G-63, C-E-SR-B3G-53 SS | 52d | 0d | 309,134.16 |
|  | 2 | **HVAC** |  | 2016-03-23 | 2016-06-15 |  |  |  |  |
| C-HVAC-SR-B3G-154 |  | Installation of Ductwork - Level 12 to level 17 | 25d | 2016-03-23 | 2016-04-20 | C-HVAC-SR-B3G-94 | 47d | 0d | 176,292.4 |
| C-HVAC-SR-B3G-204 |  | Pressure testing of Ductwork - Level 12 to level 17 | 10d | 2016-04-21 | 2016-05-02 | C-HVAC-SR-B3G-154, C-HVAC-SR-B3G-144 | 121d | 0d |  |
| C-HVAC-SR-B3G-174 |  | Installation of Chilled Water Pipes & Valves - Level 12 to level 17 | 23d | 2016-04-25 | 2016-05-21 | C-HVAC-SR-B3G-114 | 33d | 0d | 126,481.06 |
| C-HVAC-SR-B3G-164 |  | Installation of Ductwork Insullation - Level 12 to level 17 | 12d | 2016-05-03 | 2016-05-16 | C-HVAC-SR-B3G-204, C-HVAC-SR-B3G-104 | 121d | 13d | 31,110.42 |
| C-HVAC-SR-B3G-194 |  | Pressure testing & Insulation of Chilled Water Pipes - Level 12 to level 17 | 10d | 2016-05-22 | 2016-06-01 | C-HVAC-SR-B3G-174, C-HVAC-SR-B3G-134 | 95d | 0d | 34,696.33 |
| C-HVAC-SR-B3G-184 |  | Installation of Chilled Water Pipes Control Devices & Isolator - Level 12 to level 17 | 12d | 2016-06-02 | 2016-06-15 | C-HVAC-SR-B3G-194, C-HVAC-SR-B3G-124 | 95d | 0d | 11,364.89 |
|  | 3 | **Fire Fighting** |  | 2016-05-05 | 2016-07-13 |  |  |  |  |
| C-FF-SR-B3G-1331 |  | Installation of Fire Fighting Pipes - Level 12 to level 17 | 25d | 2016-05-05 | 2016-06-02 | C-FF-SR-B3G-1301 | 33d | 0d | 126,849.14 |
| C-FF-SR-B3G-1351 |  | Pressure testing of fire fighting pipes - Level 12 to level 17 | 12d | 2016-06-04 | 2016-06-16 | C-FF-SR-B3G-1331, C-FF-SR-B3G-1321 | 63d | 0d | 6,676.27 |
| C-FF-SR-B3G-1341 |  | Installation of fire FIghting Valves - Level 12 to level 17 | 20d | 2016-06-18 | 2016-07-13 | C-FF-SR-B3G-1351, C-FF-SR-B3G-1311 | 63d | 3d | 74,789.66 |

Notes:
- C-ELV-SR-B3G-1522: Expenses: 1 24509
- C-ELV-SR-B3G-1532: Expenses: 1 163542
- C-ELV-SR-B3G-1722: Expenses: 1 15745.8
- C-ELV-SR-B3G-1732: Expenses: 1 36740.3
- C-MEP-R-Gas-1922: Expenses: 1 6742.09
- C-MEP-Gas-1932: Expenses: 1 749.12
- C-E-SR-B3G-63: Expenses: 1 34617.1
- C-E-SR-B3G-73: Expenses: 1 1258614
- C-E-SR-B3G-83: Expenses: 1 309134
- C-HVAC-SR-B3G-154: Expenses: 1 176292
- C-HVAC-SR-B3G-174: Expenses: 1 126481
- C-HVAC-SR-B3G-164: Expenses: 1 31110.4
- C-HVAC-SR-B3G-194: Expenses: 1 34696.3
- C-HVAC-SR-B3G-184: Expenses: 1 11364.9
- C-FF-SR-B3G-1331: Expenses: 1 126849
- C-FF-SR-B3G-1351: Expenses: 1 6676.27
- C-FF-SR-B3G-1341: Expenses: 1 74789.7

| ID | WBS | Activity | Duration | Start | Finish | Predecessors | Total float | Free float | Cost |
| --- | --- | --- | --- | --- | --- | --- | --- | --- | --- |
|  | 4 | **Plumbing & Drainage** |  | 2016-04-28 | 2016-06-07 |  |  |  |  |
| C-PD-SR-B3G-1361 |  | Installation of Water Pipes & Valves - Level 12 to level 17 | 23d | 2016-04-28 | 2016-05-24 | C-PD-SR-B3G-1321 | 31d | 0d | 229,972.36 |
| C-PD-SR-B3G-1371 |  | Installation Drainage Pipes - Level 12 to level 17 | 23d | 2016-04-28 | 2016-05-24 | C-PD-SR-B3G-1331 | 31d | 0d | 123,415.84 |
| C-PD-SR-B3G-1381 |  | Pressure teting & Insulation of water pipes - Level 12 to level 17 | 12d | 2016-05-25 | 2016-06-07 | C-PD-SR-B3G-1361, C-PD-SR-B3G-1341 | 85d | 0d | 12,103.81 |
| C-PD-SR-B3G-1391 |  | Pressure testing of drainage pipes - Level 12 to level 17 | 12d | 2016-05-25 | 2016-06-07 | C-PD-SR-B3G-1371, C-PD-SR-B3G-1351 | 85d | 0d | 6,495.57 |
|  | 5 | **ELV** |  | 2016-05-05 | 2016-06-26 |  |  |  |  |
| C-ELV-SR-B3G-1542 |  | Installation of Cable Trays - Level 12 to level 17 | 25d | 2016-05-05 | 2016-06-02 | C-ELV-SR-B3G-1522 | 50d | 0d | 24,509.01 |
| C-ELV-SR-B3G-1552 |  | Installation of Cabling & Wirring - Level 12 to level 17 | 20d | 2016-06-04 | 2016-06-26 | C-ELV-SR-B3G-1542, C-ELV-SR-B3G-1532 | 80d | 5d | 163,542.01 |
|  | 10 | **BMS** |  | 2016-05-05 | 2016-06-26 |  |  |  |  |
| C-ELV-SR-B3G-1742 |  | Installation of Cable Trays - Level 12 to level 17 | 25d | 2016-05-05 | 2016-06-02 | C-ELV-SR-B3G-1722 | 15d | 0d | 15,745.83 |
| C-ELV-SR-B3G-1752 |  | Installation of Cabling & Wirring - Level 12 to level 17 | 20d | 2016-06-04 | 2016-06-26 | C-ELV-SR-B3G-1742, C-ELV-SR-B3G-1732 | 45d | 5d | 36,740.28 |
|  | 1 | **Gas** |  | 2016-05-05 | 2016-06-26 |  |  |  |  |
| C-MEP-R-Gas-1942 |  | Installation of Gas Pipes & Valves - Level 12 to level 17 | 25d | 2016-05-05 | 2016-06-02 | C-MEP-R-Gas-1922 | 45d | 0d | 6,742.09 |
| C-MEP-Gas-1952 |  | Testing of Gas Pipe - Level 12 to level 17 | 20d | 2016-06-04 | 2016-06-26 | C-MEP-R-Gas-1942, C-MEP-Gas-1932 | 75d | 5d | 749.12 |
|  | 4 | **Level 18 to Level 23** |  | 2015-12-05 | 2016-08-11 |  |  |  |  |
|  | 7 | **Electrical** |  | 2015-12-05 | 2016-02-17 |  |  |  |  |
| C-E-SR-B3G-93 |  | Installation of Cable Trays - Level 18 to level 23 | 25d | 2015-12-05 | 2016-01-03 | C-E-SR-B3G-63 | 5d | 0d | 34,617.14 |
| C-E-SR-B3G-103 |  | Installation, Connection & testing of Bus Bars - Level 18 to level 23 | 22d | 2016-01-13 | 2016-02-07 | C-E-SR-B3G-73 | 14d | 0d | 1,258,614.11 |
| C-E-SR-B3G-113 |  | Installation of Cabling & Wirring - Level 18 to level 23 | 20d | 2016-01-25 | 2016-02-17 | C-E-SR-B3G-93, C-E-SR-B3G-83 SS | 68d | 0d | 309,134.16 |
|  | 2 | **HVAC** |  | 2016-04-21 | 2016-07-16 |  |  |  |  |
| C-HVAC-SR-B3G-214 |  | Installation of Ductwork - Level 18 to level 23 | 25d | 2016-04-21 | 2016-05-19 | C-HVAC-SR-B3G-154 | 47d | 0d | 176,292.4 |
| C-HVAC-SR-B3G-264 |  | Pressure testing of Ductwork - Level 18 to level 23 | 10d | 2016-05-21 | 2016-05-31 | C-HVAC-SR-B3G-214, C-HVAC-SR-B3G-204 | 108d | 0d |  |
| C-HVAC-SR-B3G-234 |  | Installation of Chilled Water Pipes & Valves - Level 18 to level 23 | 23d | 2016-05-22 | 2016-06-16 | C-HVAC-SR-B3G-174 | 33d | 0d | 126,481.06 |
| C-HVAC-SR-B3G-224 |  | Installation of Ductwork Insullation - Level 18 to level 23 | 12d | 2016-06-01 | 2016-06-14 | C-HVAC-SR-B3G-264, C-HVAC-SR-B3G-164 | 108d | 13d | 31,110.42 |
| C-HVAC-SR-B3G-254 |  | Pressure testing & Insulation of Chilled Water Pipes - Level 18 to level 23 | 10d | 2016-06-18 | 2016-06-28 | C-HVAC-SR-B3G-234, C-HVAC-SR-B3G-194 | 84d | 0d | 34,696.33 |
| C-HVAC-SR-B3G-244 |  | Installation of Chilled Water Pipes Control Devices & Isolator - Level 18 to level 23 | 12d | 2016-06-29 | 2016-07-16 | C-HVAC-SR-B3G-254, C-HVAC-SR-B3G-184 | 84d | 0d | 11,364.89 |

Notes:
- C-PD-SR-B3G-1361: Expenses: 1 229972
- C-PD-SR-B3G-1371: Expenses: 1 123416
- C-PD-SR-B3G-1381: Expenses: 1 12103.8
- C-PD-SR-B3G-1391: Expenses: 1 6495.57
- C-ELV-SR-B3G-1542: Expenses: 1 24509
- C-ELV-SR-B3G-1552: Expenses: 1 163542
- C-ELV-SR-B3G-1742: Expenses: 1 15745.8
- C-ELV-SR-B3G-1752: Expenses: 1 36740.3
- C-MEP-R-Gas-1942: Expenses: 1 6742.09
- C-MEP-Gas-1952: Expenses: 1 749.12
- C-E-SR-B3G-93: Expenses: 1 34617.1
- C-E-SR-B3G-103: Expenses: 1 1258614
- C-E-SR-B3G-113: Expenses: 1 309134
- C-HVAC-SR-B3G-214: Expenses: 1 176292
- C-HVAC-SR-B3G-234: Expenses: 1 126481
- C-HVAC-SR-B3G-224: Expenses: 1 31110.4
- C-HVAC-SR-B3G-254: Expenses: 1 34696.3
- C-HVAC-SR-B3G-244: Expenses: 1 11364.9

| ID | WBS | Activity | Duration | Start | Finish | Predecessors | Total float | Free float | Cost |
| --- | --- | --- | --- | --- | --- | --- | --- | --- | --- |
|  | 3 | **Fire Fighting** |  | 2016-06-04 | 2016-08-11 |  |  |  |  |
| C-FF-SR-B3G-1361 |  | Installation of Fire Fighting Pipes - Level 18 to level 23 | 25d | 2016-06-04 | 2016-07-02 | C-FF-SR-B3G-1331 | 33d | 0d | 126,849.14 |
| C-FF-SR-B3G-1381 |  | Pressure testing of fire fighting pipes - Level 18 to level 23 | 12d | 2016-07-03 | 2016-07-19 | C-FF-SR-B3G-1361, C-FF-SR-B3G-1351 | 58d | 0d | 6,676.27 |
| C-FF-SR-B3G-1371 |  | Installation of fire FIghting Valves - Level 18 to level 23 | 20d | 2016-07-20 | 2016-08-11 | C-FF-SR-B3G-1381, C-FF-SR-B3G-1341 | 58d | 0d | 74,789.66 |
|  | 4 | **Plumbing & Drainage** |  | 2016-05-25 | 2016-07-04 |  |  |  |  |
| C-PD-SR-B3G-1401 |  | Installation of Water Pipes & Valves - Level 18 to level 23 | 23d | 2016-05-25 | 2016-06-20 | C-PD-SR-B3G-1361 | 31d | 0d | 229,972.36 |
| C-PD-SR-B3G-1411 |  | Installation Drainage Pipes - Level 18 to level 23 | 23d | 2016-05-25 | 2016-06-20 | C-PD-SR-B3G-1371 | 31d | 0d | 123,415.84 |
| C-PD-SR-B3G-1421 |  | Pressure teting & Insulation of water pipes - Level 18 to level 23 | 12d | 2016-06-21 | 2016-07-04 | C-PD-SR-B3G-1401, C-PD-SR-B3G-1381 | 74d | 0d | 12,103.81 |
| C-PD-SR-B3G-1431 |  | Pressure testing of drainage pipes - Level 18 to level 23 | 12d | 2016-06-21 | 2016-07-04 | C-PD-SR-B3G-1411, C-PD-SR-B3G-1391 | 74d | 0d | 6,495.57 |
|  | 5 | **ELV** |  | 2016-06-04 | 2016-07-28 |  |  |  |  |
| C-ELV-SR-B3G-1562 |  | Installation of Cable Trays - Level 18 to level 23 | 25d | 2016-06-04 | 2016-07-02 | C-ELV-SR-B3G-1542 | 50d | 0d | 24,509.01 |
| C-ELV-SR-B3G-1572 |  | Installation of Cabling & Wirring - Level 18 to level 23 | 20d | 2016-07-03 | 2016-07-28 | C-ELV-SR-B3G-1562, C-ELV-SR-B3G-1552 | 75d | 5d | 163,542.01 |
|  | 10 | **BMS** |  | 2016-06-04 | 2016-07-28 |  |  |  |  |
| C-ELV-SR-B3G-1762 |  | Installation of Cable Trays - Level 18 to level 23 | 25d | 2016-06-04 | 2016-07-02 | C-ELV-SR-B3G-1742 | 15d | 0d | 15,745.83 |
| C-ELV-SR-B3G-1772 |  | Installation of Cabling & Wirring - Level 18 to level 23 | 20d | 2016-07-03 | 2016-07-28 | C-ELV-SR-B3G-1762, C-ELV-SR-B3G-1752 | 40d | 5d | 36,740.28 |
|  | 1 | **Gas** |  | 2016-06-04 | 2016-07-28 |  |  |  |  |
| C-MEP-R-Gas-1962 |  | Installation of Gas Pipes & Valves - Level 18 to level 23 | 25d | 2016-06-04 | 2016-07-02 | C-MEP-R-Gas-1942 | 45d | 0d | 6,742.09 |
| C-MEP-Gas-1972 |  | Testing of Gas Pipe - Level 18 to level 23 | 20d | 2016-07-03 | 2016-07-28 | C-MEP-R-Gas-1962, C-MEP-Gas-1952 | 70d | 5d | 749.12 |
|  | 5 | **Level 24 to Level 29** |  | 2016-01-04 | 2016-09-13 |  |  |  |  |
|  | 7 | **Electrical** |  | 2016-01-04 | 2016-03-05 |  |  |  |  |
| C-E-SR-B3G-123 |  | Installation of Cable Trays - Level 24 to level 29 | 23d | 2016-01-04 | 2016-01-30 | C-E-SR-B3G-93 | 5d | 0d | 34,617.14 |
| C-E-SR-B3G-143 |  | Installation of Cabling & Wirring - Level 24 to level 29 | 20d | 2016-01-31 | 2016-02-23 | C-E-SR-B3G-123, C-E-SR-B3G-113 SS | 65d | 9d | 309,134.16 |
| C-E-SR-B3G-133 |  | Installation, Connection & testing of Bus Bars - Level 24 to level 29 | 22d | 2016-02-08 | 2016-03-05 | C-E-SR-B3G-103 | 14d | 0d | 1,258,614.11 |
|  | 2 | **HVAC** |  | 2016-05-21 | 2016-08-11 |  |  |  |  |
| C-HVAC-SR-B3G-274 |  | Installation of Ductwork - Level 24 to level 29 | 25d | 2016-05-21 | 2016-06-18 | C-HVAC-SR-B3G-214 | 47d | 0d | 176,292.4 |
| C-HVAC-SR-B3G-294 |  | Installation of Chilled Water Pipes & Valves - Level 24 to level 29 | 23d | 2016-06-18 | 2016-07-17 | C-HVAC-SR-B3G-234 | 33d | 0d | 126,481.06 |
| C-HVAC-SR-B3G-324 |  | Pressure testing of Ductwork - Level 24 to level 29 | 10d | 2016-06-19 | 2016-06-29 | C-HVAC-SR-B3G-274, C-HVAC-SR-B3G-264 | 95d | 0d |  |
| C-HVAC-SR-B3G-284 |  | Installation of Ductwork Insullation - Level 24 to level 29 | 12d | 2016-06-30 | 2016-07-17 | C-HVAC-SR-B3G-324, C-HVAC-SR-B3G-224 | 95d | 13d | 31,110.42 |
| C-HVAC-SR-B3G-314 |  | Pressure testing & Insulation of Chilled Water Pipes - Level 24 to level 29 | 10d | 2016-07-18 | 2016-07-28 | C-HVAC-SR-B3G-294, C-HVAC-SR-B3G-254 | 73d | 0d | 34,696.33 |
| C-HVAC-SR-B3G-304 |  | Installation of Chilled Water Pipes Control Devices & Isolator - Level 24 to level 29 | 12d | 2016-07-30 | 2016-08-11 | C-HVAC-SR-B3G-314, C-HVAC-SR-B3G-244 | 73d | 0d | 11,364.89 |

Notes:
- C-FF-SR-B3G-1361: Expenses: 1 126849
- C-FF-SR-B3G-1381: Expenses: 1 6676.27
- C-FF-SR-B3G-1371: Expenses: 1 74789.7
- C-PD-SR-B3G-1401: Expenses: 1 229972
- C-PD-SR-B3G-1411: Expenses: 1 123416
- C-PD-SR-B3G-1421: Expenses: 1 12103.8
- C-PD-SR-B3G-1431: Expenses: 1 6495.57
- C-ELV-SR-B3G-1562: Expenses: 1 24509
- C-ELV-SR-B3G-1572: Expenses: 1 163542
- C-ELV-SR-B3G-1762: Expenses: 1 15745.8
- C-ELV-SR-B3G-1772: Expenses: 1 36740.3
- C-MEP-R-Gas-1962: Expenses: 1 6742.09
- C-MEP-Gas-1972: Expenses: 1 749.12
- C-E-SR-B3G-123: Expenses: 1 34617.1
- C-E-SR-B3G-143: Expenses: 1 309134
- C-E-SR-B3G-133: Expenses: 1 1258614
- C-HVAC-SR-B3G-274: Expenses: 1 176292
- C-HVAC-SR-B3G-294: Expenses: 1 126481
- C-HVAC-SR-B3G-284: Expenses: 1 31110.4
- C-HVAC-SR-B3G-314: Expenses: 1 34696.3
- C-HVAC-SR-B3G-304: Expenses: 1 11364.9

| ID | WBS | Activity | Duration | Start | Finish | Predecessors | Total float | Free float | Cost |
| --- | --- | --- | --- | --- | --- | --- | --- | --- | --- |
|  | 3 | **Fire Fighting** |  | 2016-07-03 | 2016-09-13 |  |  |  |  |
| C-FF-SR-B3G-1391 |  | Installation of Fire Fighting Pipes - Level 24 to level 29 | 25d | 2016-07-03 | 2016-08-03 | C-FF-SR-B3G-1361 | 33d | 0d | 126,849.14 |
| C-FF-SR-B3G-1411 |  | Pressure testing of fire fighting pipes - Level 24 to level 29 | 12d | 2016-08-04 | 2016-08-17 | C-FF-SR-B3G-1391, C-FF-SR-B3G-1381 | 53d | 0d | 6,676.27 |
| C-FF-SR-B3G-1401 |  | Installation of fire FIghting Valves - Level 24 to level 29 | 20d | 2016-08-18 | 2016-09-13 | C-FF-SR-B3G-1411, C-FF-SR-B3G-1371 | 53d | 0d | 74,789.66 |
|  | 4 | **Plumbing & Drainage** |  | 2016-06-21 | 2016-08-03 |  |  |  |  |
| C-PD-SR-B3G-1441 |  | Installation of Water Pipes & Valves - Level 24 to level 29 | 23d | 2016-06-21 | 2016-07-20 | C-PD-SR-B3G-1401 | 31d | 0d | 229,972.36 |
| C-PD-SR-B3G-1451 |  | Installation Drainage Pipes - Level 24 to level 29 | 23d | 2016-06-21 | 2016-07-20 | C-PD-SR-B3G-1411 | 31d | 0d | 123,415.84 |
| C-PD-SR-B3G-1461 |  | Pressure teting & Insulation of water pipes - Level 24 to level 29 | 12d | 2016-07-21 | 2016-08-03 | C-PD-SR-B3G-1441, C-PD-SR-B3G-1421 | 63d | 0d | 12,103.81 |
| C-PD-SR-B3G-1471 |  | Pressure testing of drainage pipes - Level 24 to level 29 | 12d | 2016-07-21 | 2016-08-03 | C-PD-SR-B3G-1451, C-PD-SR-B3G-1431 | 63d | 0d | 6,495.57 |
|  | 5 | **ELV** |  | 2016-07-03 | 2016-08-27 |  |  |  |  |
| C-ELV-SR-B3G-1582 |  | Installation of Cable Trays - Level 24 to level 29 | 25d | 2016-07-03 | 2016-08-03 | C-ELV-SR-B3G-1562 | 50d | 0d | 24,509.01 |
| C-ELV-SR-B3G-1592 |  | Installation of Cabling & Wirring - Level 24 to level 29 | 20d | 2016-08-04 | 2016-08-27 | C-ELV-SR-B3G-1582, C-ELV-SR-B3G-1572 | 70d | 5d | 163,542.01 |
|  | 10 | **BMS** |  | 2016-07-03 | 2016-08-27 |  |  |  |  |
| C-ELV-SR-B3G-1782 |  | Installation of Cable Trays - Level 24 to level 29 | 25d | 2016-07-03 | 2016-08-03 | C-ELV-SR-B3G-1762 | 15d | 0d | 15,745.83 |
| C-ELV-SR-B3G-1792 |  | Installation of Cabling & Wirring - Level 24 to level 29 | 20d | 2016-08-04 | 2016-08-27 | C-ELV-SR-B3G-1782, C-ELV-SR-B3G-1772 | 35d | 5d | 36,740.28 |
|  | 1 | **Gas** |  | 2016-07-03 | 2016-08-27 |  |  |  |  |
| C-MEP-R-Gas-1982 |  | Installation of Gas Pipes & Valves - Level 24 to level 29 | 25d | 2016-07-03 | 2016-08-03 | C-MEP-R-Gas-1962 | 45d | 0d | 6,742.09 |
| C-MEP-Gas-1992 |  | Testing of Gas Pipe - Level 24 to level 29 | 20d | 2016-08-04 | 2016-08-27 | C-MEP-R-Gas-1982, C-MEP-Gas-1972 | 65d | 5d | 749.12 |
|  | 6 | **Level 30 to Level 35** |  | 2016-01-31 | 2016-10-13 |  |  |  |  |
|  | 7 | **Electrical** |  | 2016-01-31 | 2016-03-30 |  |  |  |  |
| C-E-SR-B3G-153 |  | Installation of Cable Trays - Level 30 to level 35 | 23d | 2016-01-31 | 2016-02-27 | C-E-SR-B3G-123 | 5d | 0d | 34,617.14 |
| C-E-SR-B3G-173 |  | Installation of Cabling & Wirring - Level 30 to level 35 | 20d | 2016-02-28 | 2016-03-21 | C-E-SR-B3G-153, C-E-SR-B3G-143 SS | 56d | 8d | 309,134.16 |
| C-E-SR-B3G-163 |  | Installation, Connection & testing of Bus Bars - Level 30 to level 35 | 22d | 2016-03-06 | 2016-03-30 | C-E-SR-B3G-133 | 14d | 0d | 1,258,614.11 |
|  | 2 | **HVAC** |  | 2016-06-19 | 2016-09-07 |  |  |  |  |
| C-HVAC-SR-B3G-334 |  | Installation of Ductwork - Level 30 to level 35 | 25d | 2016-06-19 | 2016-07-20 | C-HVAC-SR-B3G-274 | 47d | 0d | 176,292.4 |
| C-HVAC-SR-B3G-354 |  | Installation of Chilled Water Pipes & Valves - Level 30 to level 35 | 23d | 2016-07-18 | 2016-08-13 | C-HVAC-SR-B3G-294 | 33d | 0d | 126,481.06 |
| C-HVAC-SR-B3G-384 |  | Pressure testing of Ductwork - Level 30 to level 35 | 10d | 2016-07-21 | 2016-08-01 | C-HVAC-SR-B3G-334, C-HVAC-SR-B3G-324 | 82d | 0d |  |
| C-HVAC-SR-B3G-344 |  | Installation of Ductwork Insullation - Level 30 to level 35 | 12d | 2016-08-02 | 2016-08-15 | C-HVAC-SR-B3G-384, C-HVAC-SR-B3G-284 | 82d | 13d | 31,110.42 |
| C-HVAC-SR-B3G-374 |  | Pressure testing & Insulation of Chilled Water Pipes - Level 30 to level 35 | 10d | 2016-08-14 | 2016-08-24 | C-HVAC-SR-B3G-354, C-HVAC-SR-B3G-314 | 62d | 0d | 34,696.33 |
| C-HVAC-SR-B3G-364 |  | Installation of Chilled Water Pipes Control Devices & Isolator - Level 30 to level 35 | 12d | 2016-08-25 | 2016-09-07 | C-HVAC-SR-B3G-374, C-HVAC-SR-B3G-304 | 62d | 0d | 11,364.89 |

Notes:
- C-FF-SR-B3G-1391: Expenses: 1 126849
- C-FF-SR-B3G-1411: Expenses: 1 6676.27
- C-FF-SR-B3G-1401: Expenses: 1 74789.7
- C-PD-SR-B3G-1441: Expenses: 1 229972
- C-PD-SR-B3G-1451: Expenses: 1 123416
- C-PD-SR-B3G-1461: Expenses: 1 12103.8
- C-PD-SR-B3G-1471: Expenses: 1 6495.57
- C-ELV-SR-B3G-1582: Expenses: 1 24509
- C-ELV-SR-B3G-1592: Expenses: 1 163542
- C-ELV-SR-B3G-1782: Expenses: 1 15745.8
- C-ELV-SR-B3G-1792: Expenses: 1 36740.3
- C-MEP-R-Gas-1982: Expenses: 1 6742.09
- C-MEP-Gas-1992: Expenses: 1 749.12
- C-E-SR-B3G-153: Expenses: 1 34617.1
- C-E-SR-B3G-173: Expenses: 1 309134
- C-E-SR-B3G-163: Expenses: 1 1258614
- C-HVAC-SR-B3G-334: Expenses: 1 176292
- C-HVAC-SR-B3G-354: Expenses: 1 126481
- C-HVAC-SR-B3G-344: Expenses: 1 31110.4
- C-HVAC-SR-B3G-374: Expenses: 1 34696.3
- C-HVAC-SR-B3G-364: Expenses: 1 11364.9

| ID | WBS | Activity | Duration | Start | Finish | Predecessors | Total float | Free float | Cost |
| --- | --- | --- | --- | --- | --- | --- | --- | --- | --- |
|  | 3 | **Fire Fighting** |  | 2016-08-04 | 2016-10-13 |  |  |  |  |
| C-FF-SR-B3G-1421 |  | Installation of Fire Fighting Pipes - Level 30 to level 35 | 25d | 2016-08-04 | 2016-09-01 | C-FF-SR-B3G-1391 | 33d | 0d | 126,849.14 |
| C-FF-SR-B3G-1441 |  | Pressure testing of fire fighting pipes - Level 30 to level 35 | 12d | 2016-09-03 | 2016-09-19 | C-FF-SR-B3G-1421, C-FF-SR-B3G-1411 | 48d | 0d | 6,676.27 |
| C-FF-SR-B3G-1431 |  | Installation of fire FIghting Valves - Level 30 to level 35 | 20d | 2016-09-20 | 2016-10-13 | C-FF-SR-B3G-1441, C-FF-SR-B3G-1401 | 48d | 0d | 74,789.66 |
|  | 4 | **Plumbing & Drainage** |  | 2016-07-21 | 2016-08-30 |  |  |  |  |
| C-PD-SR-B3G-1481 |  | Installation of Water Pipes & Valves - Level 30 to level 35 | 23d | 2016-07-21 | 2016-08-16 | C-PD-SR-B3G-1441 | 31d | 0d | 229,972.36 |
| C-PD-SR-B3G-1491 |  | Installation Drainage Pipes - Level 30 to level 35 | 23d | 2016-07-21 | 2016-08-16 | C-PD-SR-B3G-1451 | 31d | 0d | 123,415.84 |
| C-PD-SR-B3G-1501 |  | Pressure teting & Insulation of water pipes - Level 30 to level 35 | 12d | 2016-08-17 | 2016-08-30 | C-PD-SR-B3G-1481, C-PD-SR-B3G-1461 | 52d | 0d | 12,103.81 |
| C-PD-SR-B3G-1511 |  | Pressure testing of drainage pipes - Level 30 to level 35 | 12d | 2016-08-17 | 2016-08-30 | C-PD-SR-B3G-1491, C-PD-SR-B3G-1471 | 52d | 0d | 6,495.57 |
|  | 5 | **ELV** |  | 2016-08-04 | 2016-09-29 |  |  |  |  |
| C-ELV-SR-B3G-1602 |  | Installation of Cable Trays - Level 30 to level 35 | 25d | 2016-08-04 | 2016-09-01 | C-ELV-SR-B3G-1582 | 50d | 0d | 24,509.01 |
| C-ELV-SR-B3G-1612 |  | Installation of Cabling & Wirring - Level 30 to level 35 | 20d | 2016-09-03 | 2016-09-29 | C-ELV-SR-B3G-1602, C-ELV-SR-B3G-1592 | 65d | 0d | 163,542.01 |
|  | 10 | **BMS** |  | 2016-08-04 | 2016-09-29 |  |  |  |  |
| C-ELV-SR-B3G-1802 |  | Installation of Cable Trays - Level 30 to level 35 | 25d | 2016-08-04 | 2016-09-01 | C-ELV-SR-B3G-1782 | 15d | 0d | 15,745.83 |
| C-ELV-SR-B3G-1812 |  | Installation of Cabling & Wirring - Level 30 to level 35 | 20d | 2016-09-03 | 2016-09-29 | C-ELV-SR-B3G-1802, C-ELV-SR-B3G-1792 | 30d | 5d | 36,740.28 |
|  | 1 | **Gas** |  | 2016-08-04 | 2016-09-29 |  |  |  |  |
| C-MEP-R-Gas-2002 |  | Installation of Gas Pipes & Valves - Level 30 to level 35 | 25d | 2016-08-04 | 2016-09-01 | C-MEP-R-Gas-1982 | 45d | 0d | 6,742.09 |
| C-MEP-Gas-2012 |  | Testing of Gas Pipe - Level 30 to level 35 | 20d | 2016-09-03 | 2016-09-29 | C-MEP-R-Gas-2002, C-MEP-Gas-1992 | 60d | 5d | 749.12 |
|  | 7 | **Level 36 to Level 41** |  | 2016-02-28 | 2016-11-12 |  |  |  |  |
|  | 7 | **Electrical** |  | 2016-02-28 | 2016-04-25 |  |  |  |  |
| C-E-SR-B3G-183 |  | Installation of Cable Trays - Level 36 to level 41 | 23d | 2016-02-28 | 2016-03-24 | C-E-SR-B3G-153 | 5d | 0d | 34,617.14 |
| C-E-SR-B3G-203 |  | Installation of Cabling & Wirring - Level 36 to level 41 | 20d | 2016-03-26 | 2016-04-17 | C-E-SR-B3G-183, C-E-SR-B3G-173 SS | 49d | 7d | 309,134.16 |
| C-E-SR-B3G-193 |  | Installation, Connection & testing of Bus Bars - Level 36 to level 41 | 22d | 2016-03-31 | 2016-04-25 | C-E-SR-B3G-163 | 14d | 0d | 1,258,614.11 |
|  | 2 | **HVAC** |  | 2016-07-21 | 2016-10-09 |  |  |  |  |
| C-HVAC-SR-B3G-394 |  | Installation of Ductwork - Level 36 to level 41 | 25d | 2016-07-21 | 2016-08-18 | C-HVAC-SR-B3G-334 | 47d | 0d | 176,292.4 |
| C-HVAC-SR-B3G-414 |  | Installation of Chilled Water Pipes & Valves - Level 36 to level 41 | 23d | 2016-08-14 | 2016-09-08 | C-HVAC-SR-B3G-354 | 33d | 0d | 126,481.06 |
| C-HVAC-SR-B3G-444 |  | Pressure testing of Ductwork - Level 36 to level 41 | 10d | 2016-08-20 | 2016-08-30 | C-HVAC-SR-B3G-394, C-HVAC-SR-B3G-384 | 69d | 0d |  |
| C-HVAC-SR-B3G-404 |  | Installation of Ductwork Insullation - Level 36 to level 41 | 12d | 2016-08-31 | 2016-09-17 | C-HVAC-SR-B3G-444, C-HVAC-SR-B3G-344 | 69d | 13d | 31,110.42 |
| C-HVAC-SR-B3G-434 |  | Pressure testing & Insulation of Chilled Water Pipes - Level 36 to level 41 | 10d | 2016-09-13 | 2016-09-25 | C-HVAC-SR-B3G-414, C-HVAC-SR-B3G-374 | 51d | 0d | 34,696.33 |
| C-HVAC-SR-B3G-424 |  | Installation of Chilled Water Pipes Control Devices & Isolator - Level 36 to level 41 | 12d | 2016-09-26 | 2016-10-09 | C-HVAC-SR-B3G-434, C-HVAC-SR-B3G-364 | 51d | 0d | 11,364.89 |

Notes:
- C-FF-SR-B3G-1421: Expenses: 1 126849
- C-FF-SR-B3G-1441: Expenses: 1 6676.27
- C-FF-SR-B3G-1431: Expenses: 1 74789.7
- C-PD-SR-B3G-1481: Expenses: 1 229972
- C-PD-SR-B3G-1491: Expenses: 1 123416
- C-PD-SR-B3G-1501: Expenses: 1 12103.8
- C-PD-SR-B3G-1511: Expenses: 1 6495.57
- C-ELV-SR-B3G-1602: Expenses: 1 24509
- C-ELV-SR-B3G-1612: Expenses: 1 163542
- C-ELV-SR-B3G-1802: Expenses: 1 15745.8
- C-ELV-SR-B3G-1812: Expenses: 1 36740.3
- C-MEP-R-Gas-2002: Expenses: 1 6742.09
- C-MEP-Gas-2012: Expenses: 1 749.12
- C-E-SR-B3G-183: Expenses: 1 34617.1
- C-E-SR-B3G-203: Expenses: 1 309134
- C-E-SR-B3G-193: Expenses: 1 1258614
- C-HVAC-SR-B3G-394: Expenses: 1 176292
- C-HVAC-SR-B3G-414: Expenses: 1 126481
- C-HVAC-SR-B3G-404: Expenses: 1 31110.4
- C-HVAC-SR-B3G-434: Expenses: 1 34696.3
- C-HVAC-SR-B3G-424: Expenses: 1 11364.9

| ID | WBS | Activity | Duration | Start | Finish | Predecessors | Total float | Free float | Cost |
| --- | --- | --- | --- | --- | --- | --- | --- | --- | --- |
|  | 3 | **Fire Fighting** |  | 2016-09-03 | 2016-11-12 |  |  |  |  |
| C-FF-SR-B3G-1451 |  | Installation of Fire Fighting Pipes - Level 36 to level 41 | 25d | 2016-09-03 | 2016-10-05 | C-FF-SR-B3G-1421 | 33d | 0d | 126,849.14 |
| C-FF-SR-B3G-1471 |  | Pressure testing of fire fighting pipes - Level 36 to level 41 | 12d | 2016-10-06 | 2016-10-19 | C-FF-SR-B3G-1451, C-FF-SR-B3G-1441 | 43d | 0d | 6,676.27 |
| C-FF-SR-B3G-1461 |  | Installation of fire FIghting Valves - Level 36 to level 41 | 20d | 2016-10-20 | 2016-11-12 | C-FF-SR-B3G-1471, C-FF-SR-B3G-1431 | 43d | 0d | 74,789.66 |
|  | 4 | **Plumbing & Drainage** |  | 2016-08-17 | 2016-10-01 |  |  |  |  |
| C-PD-SR-B3G-1521 |  | Installation of Water Pipes & Valves - Level 36 to level 41 | 23d | 2016-08-17 | 2016-09-15 | C-PD-SR-B3G-1481 | 31d | 0d | 229,972.36 |
| C-PD-SR-B3G-1531 |  | Installation Drainage Pipes - Level 36 to level 41 | 23d | 2016-08-17 | 2016-09-15 | C-PD-SR-B3G-1491 | 31d | 0d | 123,415.84 |
| C-PD-SR-B3G-1541 |  | Pressure teting & Insulation of water pipes - Level 36 to level 41 | 12d | 2016-09-17 | 2016-10-01 | C-PD-SR-B3G-1521, C-PD-SR-B3G-1501 | 45d | 0d | 12,103.81 |
| C-PD-SR-B3G-1551 |  | Pressure testing of drainage pipes - Level 36 to level 41 | 12d | 2016-09-17 | 2016-10-01 | C-PD-SR-B3G-1531, C-PD-SR-B3G-1511 | 45d | 0d | 6,495.57 |
|  | 5 | **ELV** |  | 2016-09-03 | 2016-10-29 |  |  |  |  |
| C-ELV-SR-B3G-1622 |  | Installation of Cable Trays - Level 36 to level 41 | 25d | 2016-09-03 | 2016-10-05 | C-ELV-SR-B3G-1602 | 50d | 0d | 24,509.01 |
| C-ELV-SR-B3G-1632 |  | Installation of Cabling & Wirring - Level 36 to level 41 | 20d | 2016-10-06 | 2016-10-29 | C-ELV-SR-B3G-1622, C-ELV-SR-B3G-1612 | 60d | 5d | 163,542.01 |
|  | 12 | **BMS** |  | 2016-09-03 | 2016-10-29 |  |  |  |  |
| C-ELV-SR-B3G-1822 |  | Installation of Cable Trays - Level 36 to level 41 | 25d | 2016-09-03 | 2016-10-05 | C-ELV-SR-B3G-1802 | 15d | 0d | 15,745.83 |
| C-ELV-SR-B3G-1832 |  | Installation of Cabling & Wirring - Level 36 to level 41 | 20d | 2016-10-06 | 2016-10-29 | C-ELV-SR-B3G-1822, C-ELV-SR-B3G-1812 | 25d | 5d | 36,740.28 |
|  | 1 | **Gas** |  | 2016-09-03 | 2016-10-29 |  |  |  |  |
| C-MEP-R-Gas-2022 |  | Installation of Gas Pipes & Valves - Level 36 to level 41 | 25d | 2016-09-03 | 2016-10-05 | C-MEP-R-Gas-2002 | 45d | 0d | 6,742.09 |
| C-MEP-Gas-2032 |  | Testing of Gas Pipe - Level 36 to level 41 | 20d | 2016-10-06 | 2016-10-29 | C-MEP-R-Gas-2022, C-MEP-Gas-2012 | 55d | 5d | 749.12 |
|  | 8 | **Level 42 to Level 47** |  | 2016-03-26 | 2016-12-11 |  |  |  |  |
|  | 7 | **Electrical** |  | 2016-03-26 | 2016-05-21 |  |  |  |  |
| C-E-SR-B3G-213 |  | Installation of Cable Trays - Level 42 to level 47 | 23d | 2016-03-26 | 2016-04-20 | C-E-SR-B3G-183 | 5d | 0d | 34,617.14 |
| C-E-SR-B3G-233 |  | Installation of Cabling & Wirring - Level 42 to level 47 | 20d | 2016-04-21 | 2016-05-14 | C-E-SR-B3G-213, C-E-SR-B3G-203 SS | 28d | 8d | 309,134.16 |
| C-E-SR-B3G-223 |  | Installation, Connection & testing of Bus Bars - Level 42 to level 47 | 22d | 2016-04-26 | 2016-05-21 | C-E-SR-B3G-193 | 14d | 0d | 1,258,614.11 |
|  | 2 | **HVAC** |  | 2016-08-20 | 2016-11-05 |  |  |  |  |
| C-HVAC-SR-B3G-454 |  | Installation of Ductwork - Level 42 to level 47 | 25d | 2016-08-20 | 2016-09-20 | C-HVAC-SR-B3G-394 | 47d | 0d | 176,292.4 |
| C-HVAC-SR-B3G-474 |  | Installation of Chilled Water Pipes & Valves - Level 42 to level 47 | 23d | 2016-09-13 | 2016-10-10 | C-HVAC-SR-B3G-414 | 33d | 0d | 126,481.06 |
| C-HVAC-SR-B3G-504 |  | Pressure testing of Ductwork - Level 42 to level 47 | 10d | 2016-09-21 | 2016-10-03 | C-HVAC-SR-B3G-454, C-HVAC-SR-B3G-444 | 56d | 0d |  |
| C-HVAC-SR-B3G-464 |  | Installation of Ductwork Insullation - Level 42 to level 47 | 12d | 2016-10-04 | 2016-10-17 | C-HVAC-SR-B3G-504, C-HVAC-SR-B3G-404 | 56d | 13d | 31,110.42 |
| C-HVAC-SR-B3G-494 |  | Pressure testing & Insulation of Chilled Water Pipes - Level 42 to level 47 | 10d | 2016-10-11 | 2016-10-22 | C-HVAC-SR-B3G-474, C-HVAC-SR-B3G-434 | 40d | 0d | 34,696.33 |
| C-HVAC-SR-B3G-484 |  | Installation of Chilled Water Pipes Control Devices & Isolator - Level 42 to level 47 | 12d | 2016-10-23 | 2016-11-05 | C-HVAC-SR-B3G-494, C-HVAC-SR-B3G-424 | 40d | 0d | 11,364.89 |

Notes:
- C-FF-SR-B3G-1451: Expenses: 1 126849
- C-FF-SR-B3G-1471: Expenses: 1 6676.27
- C-FF-SR-B3G-1461: Expenses: 1 74789.7
- C-PD-SR-B3G-1521: Expenses: 1 229972
- C-PD-SR-B3G-1531: Expenses: 1 123416
- C-PD-SR-B3G-1541: Expenses: 1 12103.8
- C-PD-SR-B3G-1551: Expenses: 1 6495.57
- C-ELV-SR-B3G-1622: Expenses: 1 24509
- C-ELV-SR-B3G-1632: Expenses: 1 163542
- C-ELV-SR-B3G-1822: Expenses: 1 15745.8
- C-ELV-SR-B3G-1832: Expenses: 1 36740.3
- C-MEP-R-Gas-2022: Expenses: 1 6742.09
- C-MEP-Gas-2032: Expenses: 1 749.12
- C-E-SR-B3G-213: Expenses: 1 34617.1
- C-E-SR-B3G-233: Expenses: 1 309134
- C-E-SR-B3G-223: Expenses: 1 1258614
- C-HVAC-SR-B3G-454: Expenses: 1 176292
- C-HVAC-SR-B3G-474: Expenses: 1 126481
- C-HVAC-SR-B3G-464: Expenses: 1 31110.4
- C-HVAC-SR-B3G-494: Expenses: 1 34696.3
- C-HVAC-SR-B3G-484: Expenses: 1 11364.9

| ID | WBS | Activity | Duration | Start | Finish | Predecessors | Total float | Free float | Cost |
| --- | --- | --- | --- | --- | --- | --- | --- | --- | --- |
|  | 3 | **Fire Fighting** |  | 2016-10-06 | 2016-12-11 |  |  |  |  |
| C-FF-SR-B3G-1481 |  | Installation of Fire Fighting Pipes - Level 42 to level 47 | 25d | 2016-10-06 | 2016-11-03 | C-FF-SR-B3G-1451 | 33d | 0d | 126,849.14 |
| C-FF-SR-B3G-1501 |  | Pressure testing of fire fighting pipes - Level 42 to level 47 | 12d | 2016-11-05 | 2016-11-17 | C-FF-SR-B3G-1481, C-FF-SR-B3G-1471 | 38d | 0d | 6,676.27 |
| C-FF-SR-B3G-1491 |  | Installation of fire FIghting Valves - Level 42 to level 47 | 20d | 2016-11-19 | 2016-12-11 | C-FF-SR-B3G-1501, C-FF-SR-B3G-1461 | 38d | 0d | 74,789.66 |
|  | 4 | **Plumbing & Drainage** |  | 2016-09-17 | 2016-10-27 |  |  |  |  |
| C-PD-SR-B3G-1561 |  | Installation of Water Pipes & Valves - Level 42 to level 47 | 23d | 2016-09-17 | 2016-10-13 | C-PD-SR-B3G-1521 | 31d | 0d | 229,972.36 |
| C-PD-SR-B3G-1571 |  | Installation Drainage Pipes - Level 42 to level 47 | 23d | 2016-09-17 | 2016-10-13 | C-PD-SR-B3G-1531 | 31d | 0d | 123,415.84 |
| C-PD-SR-B3G-1581 |  | Pressure teting & Insulation of water pipes - Level 42 to level 47 | 12d | 2016-10-15 | 2016-10-27 | C-PD-SR-B3G-1561, C-PD-SR-B3G-1541 | 38d | 0d | 12,103.81 |
| C-PD-SR-B3G-1591 |  | Pressure testing of drainage pipes - Level 42 to level 47 | 12d | 2016-10-15 | 2016-10-27 | C-PD-SR-B3G-1571, C-PD-SR-B3G-1551 | 38d | 0d | 6,495.57 |
|  | 5 | **ELV** |  | 2016-10-06 | 2016-11-27 |  |  |  |  |
| C-ELV-SR-B3G-1642 |  | Installation of Cable Trays - Level 42 to level 47 | 25d | 2016-10-06 | 2016-11-03 | C-ELV-SR-B3G-1622 | 50d | 0d | 24,509.01 |
| C-ELV-SR-B3G-1652 |  | Installation of Cabling & Wirring - Level 42 to level 47 | 20d | 2016-11-05 | 2016-11-27 | C-ELV-SR-B3G-1642, C-ELV-SR-B3G-1632 | 55d | 0d | 163,542.01 |
|  | 13 | **BMS** |  | 2016-10-06 | 2016-11-27 |  |  |  |  |
| C-ELV-SR-B3G-1842 |  | Installation of Cable Trays - Level 42 to level 47 | 25d | 2016-10-06 | 2016-11-03 | C-ELV-SR-B3G-1822 | 15d | 0d | 15,745.83 |
| C-ELV-SR-B3G-1852 |  | Installation of Cabling & Wirring - Level 42 to level 47 | 20d | 2016-11-05 | 2016-11-27 | C-ELV-SR-B3G-1842, C-ELV-SR-B3G-1832 | 20d | 0d | 36,740.28 |
|  | 1 | **Gas** |  | 2016-10-06 | 2016-11-27 |  |  |  |  |
| C-MEP-R-Gas-2042 |  | Installation of Gas Pipes & Valves - Level 42 to level 47 | 25d | 2016-10-06 | 2016-11-03 | C-MEP-R-Gas-2022 | 45d | 0d | 6,742.09 |
| C-MEP-Gas-2052 |  | Testing of Gas Pipe - Level 42 to level 47 | 20d | 2016-11-05 | 2016-11-27 | C-MEP-R-Gas-2042, C-MEP-Gas-2032 | 50d | 5d | 749.12 |
|  | 9 | **Level 48 to Roof Level** |  | 2016-04-21 | 2017-01-10 |  |  |  |  |
|  | 7 | **Electrical** |  | 2016-04-21 | 2016-06-15 |  |  |  |  |
| C-E-SR-B3G-243 |  | Installation of Cable Trays - Level 48 to Roof | 23d | 2016-04-21 | 2016-05-17 | C-E-SR-B3G-213 | 5d | 0d | 34,617.14 |
| C-E-SR-B3G-263 |  | Installation of Cabling & Wirring - Level 48 to Roof | 20d | 2016-05-18 | 2016-06-09 | C-E-SR-B3G-243, C-E-SR-B3G-233 SS | 5d | 0d | 309,134.16 |
| C-E-SR-B3G-253 |  | Installation, Connection & testing of Bus Bars - Level 48 to Roof | 22d | 2016-05-22 | 2016-06-15 | C-E-SR-B3G-223 | 14d | 3d | 1,258,614.11 |
|  | 2 | **HVAC** |  | 2016-09-21 | 2016-12-01 |  |  |  |  |
| C-HVAC-SR-B3G-514 |  | Installation of Ductwork - Level 48 to Roof | 25d | 2016-09-21 | 2016-10-20 | C-HVAC-SR-B3G-454 | 47d | 0d | 176,511.37 |
| C-HVAC-SR-B3G-534 |  | Installation of Chilled Water Pipes & Valves - Level 48 to Roof | 23d | 2016-10-11 | 2016-11-06 | C-HVAC-SR-B3G-474 | 33d | 0d | 126,481.06 |
| C-HVAC-SR-B3G-564 |  | Pressure testing of Ductwork - Level 48 to Roof | 10d | 2016-10-22 | 2016-11-01 | C-HVAC-SR-B3G-514, C-HVAC-SR-B3G-504 | 47d | 0d |  |
| C-HVAC-SR-B3G-524 |  | Installation of Ductwork Insullation - Level 48 to Roof | 12d | 2016-11-02 | 2016-11-15 | C-HVAC-SR-B3G-564, C-HVAC-SR-B3G-464 | 47d | 14d | 31,110.42 |
| C-HVAC-SR-B3G-554 |  | Pressure testing & Insulation of Chilled Water Pipes - Level 48 to Roof | 10d | 2016-11-07 | 2016-11-17 | C-HVAC-SR-B3G-534, C-HVAC-SR-B3G-494 | 33d | 0d | 34,696.33 |
| C-HVAC-SR-B3G-544 |  | Installation of Chilled Water Pipes Control Devices & Isolator - Level 48 to Roof | 12d | 2016-11-19 | 2016-12-01 | C-HVAC-SR-B3G-554, C-HVAC-SR-B3G-484 | 33d | 0d | 11,364.89 |

Notes:
- C-FF-SR-B3G-1481: Expenses: 1 126849
- C-FF-SR-B3G-1501: Expenses: 1 6676.27
- C-FF-SR-B3G-1491: Expenses: 1 74789.7
- C-PD-SR-B3G-1561: Expenses: 1 229972
- C-PD-SR-B3G-1571: Expenses: 1 123416
- C-PD-SR-B3G-1581: Expenses: 1 12103.8
- C-PD-SR-B3G-1591: Expenses: 1 6495.57
- C-ELV-SR-B3G-1642: Expenses: 1 24509
- C-ELV-SR-B3G-1652: Expenses: 1 163542
- C-ELV-SR-B3G-1842: Expenses: 1 15745.8
- C-ELV-SR-B3G-1852: Expenses: 1 36740.3
- C-MEP-R-Gas-2042: Expenses: 1 6742.09
- C-MEP-Gas-2052: Expenses: 1 749.12
- C-E-SR-B3G-243: Expenses: 1 34617.1
- C-E-SR-B3G-263: Expenses: 1 309134
- C-E-SR-B3G-253: Expenses: 1 1258614
- C-HVAC-SR-B3G-514: Expenses: 1 176511
- C-HVAC-SR-B3G-534: Expenses: 1 126481
- C-HVAC-SR-B3G-524: Expenses: 1 31110.4
- C-HVAC-SR-B3G-554: Expenses: 1 34696.3
- C-HVAC-SR-B3G-544: Expenses: 1 11364.9

| ID | WBS | Activity | Duration | Start | Finish | Predecessors | Total float | Free float | Cost | AREA |
| --- | --- | --- | --- | --- | --- | --- | --- | --- | --- | --- |
|  | 3 | **Fire Fighting** |  | 2016-11-05 | 2017-01-10 |  |  |  |  |  |
| C-FF-SR-B3G-1511 |  | Installation of Fire Fighting Pipes - Level 48 to Roof | 25d | 2016-11-05 | 2016-12-03 | C-FF-SR-B3G-1481 | 33d | 0d | 126,849.14 |  |
| C-FF-SR-B3G-1531 |  | Pressure testing of fire fighting pipes - Level 48 to Roof | 12d | 2016-12-04 | 2016-12-17 | C-FF-SR-B3G-1511, C-FF-SR-B3G-1501 | 33d | 0d | 6,676.27 |  |
| C-FF-SR-B3G-1521 |  | Installation of fire FIghting Valves - Level 48 to Roof | 20d | 2016-12-19 | 2017-01-10 | C-FF-SR-B3G-1531, C-FF-SR-B3G-1491 | 33d | 0d | 74,789.66 |  |
|  | 4 | **Plumbing & Drainage** |  | 2016-10-15 | 2016-11-23 |  |  |  |  |  |
| C-PD-SR-B3G-1601 |  | Installation of Water Pipes & Valves - Level 48 to Roof | 23d | 2016-10-15 | 2016-11-09 | C-PD-SR-B3G-1561 | 31d | 0d | 229,972.36 |  |
| C-PD-SR-B3G-1611 |  | Installation Drainage Pipes - Level 48 to Roof | 23d | 2016-10-15 | 2016-11-09 | C-PD-SR-B3G-1571 | 31d | 0d | 123,415.84 |  |
| C-PD-SR-B3G-1621 |  | Pressure teting & Insulation of water pipes - Level 48 to Roof | 12d | 2016-11-10 | 2016-11-23 | C-PD-SR-B3G-1601, C-PD-SR-B3G-1581 | 31d | 0d | 12,103.81 |  |
| C-PD-SR-B3G-1631 |  | Pressure testing of drainage pipes - Level 48 to Roof | 12d | 2016-11-10 | 2016-11-23 | C-PD-SR-B3G-1611, C-PD-SR-B3G-1591 | 31d | 0d | 6,495.57 |  |
|  | 5 | **ELV** |  | 2016-11-05 | 2016-12-27 |  |  |  |  |  |
| C-ELV-SR-B3G-1662 |  | Installation of Cable Trays - Level 48 to Roof | 25d | 2016-11-05 | 2016-12-03 | C-ELV-SR-B3G-1642 | 50d | 0d | 24,509.01 |  |
| C-ELV-SR-B3G-1672 |  | Installation of Cabling & Wirring - Level 48 to Roof | 20d | 2016-12-04 | 2016-12-27 | C-ELV-SR-B3G-1662, C-ELV-SR-B3G-1652 | 50d | 0d | 163,542.01 |  |
|  | 10 | **BMS** |  | 2016-11-05 | 2016-12-27 |  |  |  |  |  |
| C-ELV-SR-B3G-1862 |  | Installation of Cable Trays - Level 48 to Roof | 25d | 2016-11-05 | 2016-12-03 | C-ELV-SR-B3G-1842 | 15d | 0d | 15,745.83 |  |
| C-ELV-SR-B3G-1872 |  | Installation of Cabling & Wirring - Level 48 to Roof | 20d | 2016-12-04 | 2016-12-27 | C-ELV-SR-B3G-1862, C-ELV-SR-B3G-1852 | 15d | 0d | 36,740.28 |  |
|  | 1 | **Gas** |  | 2016-11-05 | 2016-12-27 |  |  |  |  |  |
| C-MEP-R-Gas-2062 |  | Installation of Gas Pipes & Valves - Level 48 to Roof | 25d | 2016-11-05 | 2016-12-03 | C-MEP-R-Gas-2042 | 45d | 0d | 6,742.09 |  |
| C-MEP-Gas-2072 |  | Testing of Gas Pipe - Level 48 to Roof | 20d | 2016-12-04 | 2016-12-27 | C-MEP-R-Gas-2062, C-MEP-Gas-2052 | 45d | 35d | 749.12 |  |
|  | 54 | **MEP works - Core, Lobbies & rooms** |  | 2015-02-25 | 2017-03-02 |  |  |  |  |  |
|  | 54 | **MEP - Ground Level** |  | 2015-02-25 | 2016-07-02 |  |  |  |  |  |
|  | 1 | **Electrical** |  | 2015-03-14 | 2016-03-09 |  |  |  |  |  |
| C-MEP-E-6 |  | Installation of first Electrical Fix Conduits, Boxes within block work & Gypsum Boards at Ground level | 20d | 2015-03-14 | 2015-04-05 | C-F-P-3, PQ-CS-C-1272, P-MEP-E-4643 | 104d | 0d | 66,042.69 | GEN |
| C-MEP-E-56 |  | Installation of Cable Trays & Truncking at Ground level | 18d | 2015-04-01 | 2015-04-21 | C-MEP-FF-4 SS+10d, C-MEP-PD-5 SS+5d, PQ-CS-C-1272, P-MEP-E-4723 | 124d | 0d | 21,017.55 |  |
| C-MEP-E-16 |  | Installation of Electrical Second Fix (Cabling & Wirring etc..). at Ground level | 18d | 2015-04-22 | 2015-05-12 | C-MEP-E-6, C-MEP-E-56, P-MEP-E-4763 | 138d | 13d | 216,465.1 | GEN |
| C-MEP-E-26 |  | Installation & Connection of Electrical DB's, SMDB's & MCC's at Ground level | 16d | 2015-07-29 | 2015-08-16 | P-MEP-E-5163, P-MEP-E-5203, C-MEP-E-16 | 96d | 0d | 130,780.17 | GEN |
| C-MEP-E-36 |  | Installation & Connection of Lighting Fixtures & Sockets at Ground level | 12d | 2016-02-25 | 2016-03-09 | C-MEP-E-16, C-F-WF-14 FF, C-F-WF-24 FF, C-F-CF-37, C-F-CF-27, C-MEP-E-26, P-MEP-E-4803, P-MEP-E-4843, C-F-P-LSF-82 FF | 151d | 65d | 85,916.8 | GEN |

Notes:
- C-FF-SR-B3G-1511: Expenses: 1 126849
- C-FF-SR-B3G-1531: Expenses: 1 6676.27
- C-FF-SR-B3G-1521: Expenses: 1 74789.7
- C-PD-SR-B3G-1601: Expenses: 1 229972
- C-PD-SR-B3G-1611: Expenses: 1 123416
- C-PD-SR-B3G-1621: Expenses: 1 12103.8
- C-PD-SR-B3G-1631: Expenses: 1 6495.57
- C-ELV-SR-B3G-1662: Expenses: 1 24509
- C-ELV-SR-B3G-1672: Expenses: 1 163542
- C-ELV-SR-B3G-1862: Expenses: 1 15745.8
- C-ELV-SR-B3G-1872: Expenses: 1 36740.3
- C-MEP-R-Gas-2062: Expenses: 1 6742.09
- C-MEP-Gas-2072: Expenses: 1 749.12
- C-MEP-E-6: Expenses: 1 66042.7
- C-MEP-E-56: Expenses: 1 21017.5
- C-MEP-E-16: Expenses: 1 57962.7; 2 158502
- C-MEP-E-26: Expenses: 1 78921.1; 2 51859
- C-MEP-E-36: Expenses: 1 85916.8

| ID | WBS | Activity | Duration | Start | Finish | Predecessors | Total float | Free float | Cost | AREA |
| --- | --- | --- | --- | --- | --- | --- | --- | --- | --- | --- |
|  | 2 | **HVAC** |  | 2015-02-25 | 2016-03-09 |  |  |  |  |  |
| C-MEP-AC-8 |  | Installation of Ductwork, Insulation & Dampers at Ground level | 23d | 2015-02-25 | 2015-03-23 | C-F-P-3 SS, SD-CS-B1-172, PQ-CS-C-1252, P-MEP-AC-4043 FF, P-MEP-AC-3723 | 107d | 0d | 207,402.82 | GEN |
| C-MEP-AC-58 |  | Pressure testing of Ductwork at Ground level | 8d | 2015-03-24 | 2015-04-01 | C-MEP-AC-8 | 143d | 15d |  | GEN |
| C-MEP-AC-28 |  | Installation of Chilled Water Pipes & Valves at Ground level | 25d | 2015-04-21 | 2015-05-19 | C-MEP-AC-8 SS+10d, P-MEP-AC-3803 | 120d | 0d | 47,430.4 | GEN |
| C-MEP-AC-48 |  | Pressure testing & Insulation of Chilled Water Pipes at Ground level | 12d | 2015-05-20 | 2015-06-02 | C-MEP-AC-28 | 121d | 0d | 8,821.1 | GEN |
| C-MEP-AC-38 |  | Installation of Chilled Water Pipes Control Devices & Isolator at Ground level | 8d | 2015-06-06 | 2015-06-14 | C-MEP-AC-48, P-MEP-AC-3843 | 135d | 2d | 2,889.38 | GEN |
| C-MEP-AC-18 |  | Installation of Silencers, Attenuators, Isolators & Detectors at Ground level | 12d | 2015-08-19 | 2015-09-01 | C-MEP-AC-58, P-MEP-AC-3763, P-MEP-AC-4003 | 127d | 0d | 41,704.9 | GEN |
| C-MEP-AC-68 |  | Installation of HVAC equipments AHU's, FCU's, ERU's, VAV's, CAV's & Fans at Ground level | 25d | 2015-08-22 | 2015-09-19 | C-MEP-AC-58 FF, C-MEP-AC-48 FF, C-MEP-AC-8 SS, P-MEP-AC-4403, P-MEP-AC-4443 FF+5d, P-MEP-AC-4523, P-MEP-AC-4563 FF+5d, P-MEP-AC-3883, P-MEP-AC-4203 | 92d | 0d | 169,332.12 | GEN |
| C-MEP-AC-78 |  | Installation of Grilles, Diffusers & Controller at Ground level | 12d | 2016-02-25 | 2016-03-09 | C-MEP-AC-68, C-F-CF-37, C-F-CF-27, C-F-WF-24 FF, C-F-CF-27 FF, C-F-WF-14 FF, P-MEP-AC-4123 | 213d | 33d | 88,688.53 | GEN |
|  | 3 | **Fire Fighting** |  | 2015-03-14 | 2015-11-30 |  |  |  |  |  |
| C-MEP-FF-4 |  | Installation of FIre fighting Pipes at Ground level | 25d | 2015-03-14 | 2015-04-11 | C-MEP-AC-8 SS+10d, SD-CS-B1-192, P-MEP-FF-3003 | 106d | 0d | 62,311.86 | GEN |
| C-MEP-FF-24 |  | Pressure testing of fire fighting pipes at Ground level | 8d | 2015-04-12 | 2015-04-20 | C-MEP-FF-4 | 106d | 9d | 5,280.67 | GEN |
| C-MEP-FF-14 |  | Installation of fire Fighting Valves at Ground level | 20d | 2015-05-02 | 2015-05-24 | C-MEP-FF-24, P-MEP-FF-3443 | 97d | 0d | 22,436.9 | GEN |
| C-MEP-FF-34 |  | Installation of Fire Fighting Sprinklers & Fire hose Cabinets & Extinguishers at Ground level | 14d | 2015-11-15 | 2015-11-30 | C-MEP-FF-14, C-F-CF-27, C-F-CF-17, C-MEP-FF-24, P-MEP-FF-3043, P-MEP-FF-3563, P-MEP-FF-3603 | 116d | 0d | 78,220.52 | GEN |
|  | 4 | **Plumbing & Drainage** |  | 2015-03-26 | 2016-03-03 |  |  |  |  |  |
| C-MEP-PD-15 |  | Installation drainage Pipes at Ground level | 25d | 2015-03-26 | 2015-04-23 | C-MEP-PD-5 SS, PQ-CS-C-1232, P-MEP-P-2443, P-MEP-P-2483 | 102d | 0d | 38,973.42 | GEN |
| C-MEP-PD-5 |  | Installation of Water Pipes & Valves (Hot & Cold atc..) at Ground level | 20d | 2015-03-26 | 2015-04-18 | C-MEP-FF-4 SS, C-F-P-13, SD-CS-B1-232, P-MEP-P-2323, PQ-CS-C-1232 | 102d | 0d | 112,968.88 | GEN |
| C-MEP-PD-25 |  | Pressure testing & Insullation of water pipes at Ground level | 8d | 2015-04-19 | 2015-04-27 | C-MEP-PD-5, P-MEP-P-2363 | 165d | 0d | 9,573.63 | GEN |
| C-MEP-PD-35 |  | Pressure testing of drainage pipes at Ground level | 8d | 2015-04-25 | 2015-05-03 | C-MEP-PD-15 | 179d | 17d | 1,651.42 | GEN |
| C-MEP-PD-45 |  | Installation of Outlets, Drains, Gullies, Cowls, & Clean out at Ground level | 20d | 2016-02-09 | 2016-03-03 | C-MEP-PD-25, C-MEP-PD-25 FF, C-F-FF-14, C-F-WF-14, C-F-FF-14 FF, C-F-WF-34, C-F-WF-14 FF, C-F-DW-14, P-MEP-P-2963, P-MEP-P-2603, P-MEP-P-2443, P-MEP-P-2563, C-F-P-LSF-82 FF | 214d | 26d | 15,975.09 | GEN |
|  | 7 | **ELV systems** |  | 2015-03-26 | 2015-10-25 |  |  |  |  |  |
|  | 1 | **Room Management System** |  | 2015-03-26 | 2015-09-29 |  |  |  |  |  |
| C-ELV-RMS-5 |  | Installation of RMS first fix (Conduits, Boxes within block work , Gypsum Boards & Raised FLooring at Ground level | 20d | 2015-03-26 | 2015-04-18 | C-F-P-13, C-F-P-3, SD-CS-B1-412, PQ-CS-C-1292 | 110d | 0d | 11,902.78 | GEN |
| C-ELV-RMS-45 |  | Installation of Cable Trays & Truncking at Ground level | 25d | 2015-04-30 | 2015-05-28 | C-ELV-CS-45 SS+5d, PQ-CS-C-1292 | 116d | 0d | 2,769.38 |  |
| C-ELV-RMS-15 |  | Installation of second fix (Cabling & Wirring etc..) at Ground level | 25d | 2015-05-30 | 2015-06-27 | C-ELV-RMS-5, C-ELV-RMS-45 | 157d | 15d | 11,902.78 | GEN |
| C-ELV-RMS-25 |  | Installation & Connection of ethernets & HVAC thermostates etc.. at Ground level | 25d | 2015-07-18 | 2015-08-15 | C-ELV-RMS-15, P-MEP-P-3403, P-MEP-P-3563, P-MEP-P-3603 | 142d | 16d | 27,773.16 | GEN |
| C-ELV-RMS-35 |  | Installtion & Connection of Panels, Controller, switches, server etc..) at Ground level | 20d | 2015-09-03 | 2015-09-29 | C-ELV-RMS-25, P-MEP-P-3443, P-MEP-P-3483, P-MEP-P-3523, P-MEP-P-3643, P-MEP-P-3683, P-MEP-P-3723 | 175d | 0d | 27,773.16 |  |

Notes:
- C-MEP-AC-8: Expenses: 1 207403
- C-MEP-AC-28: Expenses: 1 47430.4
- C-MEP-AC-48: Expenses: 1 8821.1
- C-MEP-AC-38: Expenses: 1 2889.38
- C-MEP-AC-18: Expenses: 1 41704.9
- C-MEP-AC-68: Expenses: 1 169332
- C-MEP-AC-78: Expenses: 1 88688.5
- C-MEP-FF-4: Expenses: 1 62311.9
- C-MEP-FF-24: Expenses: 1 5280.67
- C-MEP-FF-14: Expenses: 1 22436.9
- C-MEP-FF-34: Expenses: 1 78220.5
- C-MEP-PD-15: Expenses: 1 38973.4
- C-MEP-PD-5: Expenses: 1 112969
- C-MEP-PD-25: Expenses: 1 9573.63
- C-MEP-PD-35: Expenses: 1 1651.42
- C-MEP-PD-45: Expenses: 1 15975.1
- C-ELV-RMS-5: Expenses: 1 11902.8
- C-ELV-RMS-45: Expenses: 1 2769.38
- C-ELV-RMS-15: Expenses: 1 11902.8
- C-ELV-RMS-25: Expenses: 1 27773.2
- C-ELV-RMS-35: Expenses: 1 27773.2

| ID | WBS | Activity | Duration | Start | Finish | Predecessors | Total float | Free float | Cost | AREA |
| --- | --- | --- | --- | --- | --- | --- | --- | --- | --- | --- |
|  | 12 | **Fire Alarm & Detection System** |  | 2015-03-26 | 2015-09-28 |  |  |  |  |  |
| C-ELV-FA-5 |  | Installation of FA first Fix Conduits, Boxes within block work , Gypsum Boards & Raised FLooring at Ground level | 20d | 2015-03-26 | 2015-04-18 | C-F-P-13, C-F-P-3, PQ-CS-C-1292 | 115d | 0d | 13,660.92 | GEN |
| C-ELV-FA-45 |  | Installation of Cable Trays & Truncking at Ground level | 25d | 2015-06-04 | 2015-07-02 | C-ELV-MSPA-45 SS+25d, SD-CS-B1-452 | 116d | 0d | 2,769.38 |  |
| C-ELV-FA-15 |  | Installation of second fix (Cabling & Wirring etc..) at Ground level | 25d | 2015-07-04 | 2015-08-03 | C-ELV-FA-5, C-ELV-FA-45, P-MEP-P-4203 | 127d | 0d | 22,768.2 | GEN |
| C-ELV-FA-25 |  | Installation & Connection of heat detector, smoke detector, flame detector etc.. at Ground level | 25d | 2015-08-04 | 2015-09-01 | C-ELV-FA-15, P-MEP-P-4283, P-MEP-P-4323, P-MEP-P-4363, P-MEP-P-4243 | 127d | 0d | 27,321.84 | GEN |
| C-ELV-FA-35 |  | Installtion & Connection of Racks & Panels at Ground level | 20d | 2015-09-02 | 2015-09-28 | C-ELV-FA-25, P-MEP-P-4403 | 156d | 0d | 27,321.84 |  |
|  | 2 | **Music System & Public Address System** |  | 2015-03-26 | 2015-08-26 |  |  |  |  |  |
| C-ELV-MSPA-5 |  | Installation of MS/PA first fix (Conduits, Boxes within block work, Gypsum Boards & Raised FLooring at Ground level | 20d | 2015-03-26 | 2015-04-18 | C-F-P-13, C-F-P-3, SD-CS-B1-432, PQ-CS-C-1292 | 62d | 0d | 6,994.34 | GEN |
| C-ELV-MSPA-45 |  | Installation of Cable Trays & Truncking at Ground level | 25d | 2015-05-06 | 2015-06-03 | C-ELV-RMS-45 SS+5d | 116d | 0d | 2,769.38 |  |
| C-ELV-MSPA-15 |  | Installation of second fix (Cabling & Wirring etc..) at Ground level | 25d | 2015-06-04 | 2015-07-02 | C-ELV-MSPA-5, C-ELV-MSPA-45, P-MEP-P-3763 | 152d | 0d | 6,994.34 | GEN |
| C-ELV-MSPA-25 |  | Installation & Connection of speakers, Amplifier & Controller at Ground level | 25d | 2015-07-04 | 2015-08-03 | C-ELV-MSPA-15, P-MEP-P-3803, P-MEP-P-3843, P-MEP-P-3883, P-MEP-P-3963, P-MEP-P-4003 | 152d | 0d | 16,320.12 | GEN |
| C-ELV-MSPA-35 |  | Installtion & Connection of Media hub, panels and processor at Ground level | 20d | 2015-08-04 | 2015-08-26 | C-ELV-MSPA-25, P-MEP-P-3923, P-MEP-P-4043, P-MEP-P-4083, P-MEP-P-4123, P-MEP-P-4163 | 201d | 0d | 16,320.12 |  |
|  | 3 | **IP CCTV & Access Control System** |  | 2015-03-26 | 2015-09-10 |  |  |  |  |  |
| C-ELV-CCTV-5 |  | Installation of CCTV first Fix Conduits, Boxes within block work, Gypsum Boards & Raised FLooring at Ground level | 20d | 2015-03-26 | 2015-04-18 | C-F-P-13, C-F-P-3, SD-CS-B1-472, PQ-CS-C-1292 | 122d | 0d | 8,161.35 | GEN |
| C-ELV-CCTV-45 |  | Installation of Cable Trays & Truncking at Ground level | 25d | 2015-06-28 | 2015-07-28 | C-ELV-FA-45 SS+20d | 116d | 0d | 2,769.38 |  |
| C-ELV-CCTV-15 |  | Installation of second fix (Cabling & Wirring etc..) at Ground level | 20d | 2015-07-29 | 2015-08-20 | C-ELV-CCTV-5, C-ELV-CCTV-45, P-MEP-P-4443 | 119d | 0d | 19,043.14 | GEN |
| C-ELV-CCTV-35 |  | Installtion & Connection of Racks, Panels etc... at Ground level | 25d | 2015-08-13 | 2015-09-10 | C-ELV-CCTV-25 FF, P-MEP-P-4523, P-MEP-P-4683 | 123d | 0d | 7,322.52 |  |
| C-ELV-CCTV-25 |  | Installation & Connection of Camera's & Alarms at Ground level | 18d | 2015-08-22 | 2015-09-10 | C-ELV-CCTV-15, P-MEP-P-4483, P-MEP-P-4563, P-MEP-P-4603, P-MEP-P-4643 | 119d | 0d | 183,698.91 | GEN |
|  | 7 | **Communication System** |  | 2015-03-26 | 2015-10-25 |  |  |  |  |  |
| C-ELV-CS-5 |  | Installation of CS first fix (Conduits, Boxes within block work, Gypsum Boards & Raised FLooring at Ground level | 20d | 2015-03-26 | 2015-04-18 | C-F-P-13, C-F-P-3, SD-CS-B1-392, PQ-CS-C-1292 | 119d | 0d | 32,708.4 | GEN |
| C-ELV-CS-45 |  | Installation of Cable Trays & Truncking at Ground level | 18d | 2015-04-25 | 2015-05-14 | C-MEP-E-56 SS, P-MEP-P-3003, PQ-CS-C-1292 | 106d | 0d | 2,769.38 |  |
| C-ELV-CS-15 |  | Installation of second fix (Cabling & Wirring etc..) at Ground level | 25d | 2015-05-16 | 2015-06-13 | C-ELV-CS-5, C-ELV-CS-45, P-MEP-P-3043 | 106d | 0d | 98,125.21 | GEN |
| C-ELV-CS-25 |  | Installation & Connection of Wireless Access points & IP dect phone & RJ 45 at Ground level | 25d | 2015-08-31 | 2015-10-01 | C-ELV-CS-15, P-MEP-P-3083, P-MEP-P-3123, P-MEP-P-3243 | 104d | 0d | 93,342.54 | GEN |
| C-ELV-CS-35 |  | Installtion & Connection of Controller & Instrumentation at Ground level | 20d | 2015-10-03 | 2015-10-25 | C-ELV-CS-25, P-MEP-P-3163, P-MEP-P-3203, P-MEP-P-3283, P-MEP-P-3323, P-MEP-P-3363 | 125d | 0d | 223,314.69 |  |

Notes:
- C-ELV-FA-5: Expenses: 1 13660.9
- C-ELV-FA-45: Expenses: 1 2769.38
- C-ELV-FA-15: Expenses: 1 22768.2
- C-ELV-FA-25: Expenses: 1 27321.8
- C-ELV-FA-35: Expenses: 1 27321.8
- C-ELV-MSPA-5: Expenses: 1 6994.34
- C-ELV-MSPA-45: Expenses: 1 2769.38
- C-ELV-MSPA-15: Expenses: 1 6994.34
- C-ELV-MSPA-25: Expenses: 1 16320.1
- C-ELV-MSPA-35: Expenses: 1 16320.1
- C-ELV-CCTV-5: Expenses: 1 8161.35
- C-ELV-CCTV-45: Expenses: 1 2769.38
- C-ELV-CCTV-15: Expenses: 1 19043.1
- C-ELV-CCTV-35: Expenses: 1 7322.52
- C-ELV-CCTV-25: Expenses: 1 183699
- C-ELV-CS-5: Expenses: 1 32708.4
- C-ELV-CS-45: Expenses: 1 2769.38
- C-ELV-CS-15: Expenses: 1 98125.2
- C-ELV-CS-25: Expenses: 1 93342.5
- C-ELV-CS-35: Expenses: 1 223315

| ID | WBS | Activity | Duration | Start | Finish | Predecessors | Total float | Free float | Cost | AREA |
| --- | --- | --- | --- | --- | --- | --- | --- | --- | --- | --- |
|  | 4 | **IP, SMATV & QAM Television System** |  | 2015-03-26 | 2015-10-08 |  |  |  |  |  |
| C-ELV-SMATV-5 |  | Installation of SMATV first Fix Conduits, Boxes within block work , Gypsum Boards & Raised FLooring at Ground level | 20d | 2015-03-26 | 2015-04-18 | C-F-P-13, C-F-P-3, SD-CS-B1-492 | 126d | 0d | 4,452.18 | GEN |
| C-ELV-SMATV-45 |  | Installation of Cable Trays & Truncking at Ground level | 25d | 2015-07-04 | 2015-08-03 | C-ELV-CCTV-45 SS+5d, P-MEP-P-4723 | 116d | 0d | 2,769.38 |  |
| C-ELV-SMATV-15 |  | Installation of second fix (Cabling & Wirring etc..) at Ground level | 16d | 2015-08-04 | 2015-08-22 | C-ELV-SMATV-5, C-ELV-SMATV-45 | 118d | 0d | 10,388.41 | GEN |
| C-ELV-SMATV-25 |  | Installation & Connection of Outlets, switches and splitter at Ground level | 18d | 2015-08-23 | 2015-09-12 | C-ELV-SMATV-15, P-MEP-P-4763, P-MEP-P-4843 | 118d | 0d | 6,537.45 | GEN |
| C-ELV-SMATV-35 |  | Installtion & Connection of SMATV & QAM fiber & receiver at Ground level | 20d | 2015-09-13 | 2015-10-08 | C-ELV-SMATV-25, P-MEP-P-4803 | 167d | 0d | 2,419.21 |  |
|  | 5 | **BMS system** |  | 2015-03-26 | 2015-11-08 |  |  |  |  |  |
| C-MEP-BMS-5 |  | Installation of BMS first Fix Conduits, Boxes within block work , Gypsum Boards & Raised FLooring at Ground level | 20d | 2015-03-26 | 2015-04-18 | C-F-P-13, C-F-P-3, SD-CS-B1-372, PQ-CS-C-1312, PQ-CS-C-1312 FF | 119d | 0d | 8,895.95 | GEN |
| C-MEP-BMS-45 |  | Installation of Cable trays & Trunking at Ground level | 20d | 2015-07-09 | 2015-08-03 | C-ELV-SMATV-45 SS+5d, PQ-CS-C-1312 | 116d | 0d |  |  |
| C-MEP-BMS-15 |  | Installation of BMS Cabling & Wirring at Ground level | 16d | 2015-08-04 | 2015-08-22 | C-MEP-BMS-5, C-MEP-BMS-45, P-MEP-P-4883 | 116d | 24d | 11,861.27 | GEN |
| C-MEP-BMS-25 |  | Installation & Connection of BMS Sensors, Relays, & Valves at Ground level | 20d | 2015-09-23 | 2015-10-15 | C-MEP-BMS-15, C-MEP-PD-35, C-MEP-PD-25, C-MEP-FF-14, C-MEP-AC-68, C-MEP-AC-48, C-MEP-AC-58, P-MEP-P-4923 | 92d | 0d | 14,826.58 | GEN |
| C-MEP-BMS-35 |  | Installtion & Connection of BMS Racks, Panels etc... at Ground level | 20d | 2015-10-17 | 2015-11-08 | C-MEP-BMS-25, P-MEP-P-4963, P-MEP-P-5003, P-MEP-P-5043 | 191d | 0d | 14,826.58 |  |
|  | 6 | **Gas System** |  | 2016-05-17 | 2016-07-02 |  |  |  |  |  |
| C-MEP-Gas-2875 |  | Installation & testing of Gas Pipes & Supports at Ground level | 20d | 2016-05-17 | 2016-06-08 | C-MEP-PD-35, C-MEP-PD-25, C-MEP-FF-24, C-MEP-Gas-2865 | 6d | 0d | 4,994.14 | GEN |
| C-MEP-Gas-2885 |  | Installation & testing of Gas Valves at Ground level | 20d | 2016-06-09 | 2016-07-02 | C-MEP-Gas-2875 | 6d | 0d | 3,329.43 |  |
|  | 52 | **MEP - Ground Mezzanine Level** |  | 2015-03-24 | 2016-06-09 |  |  |  |  |  |
|  | 1 | **Electrical** |  | 2015-04-06 | 2016-06-09 |  |  |  |  |  |
| C-MEP-E-366 |  | Installation of first Electrical Fix Conduits, Boxes within block work & Gypsum Boards at Ground Mezzanine level | 20d | 2015-04-06 | 2015-04-28 | C-F-P-183, C-MEP-E-6 | 104d | 0d | 55,235.7 | GEN |
| C-MEP-E-416 |  | Installation of Cable Trays & Truncking at Ground Mezzanine level | 18d | 2015-04-16 | 2015-05-06 | C-MEP-FF-244 SS+10d, C-MEP-PD-305 SS+5d, C-MEP-E-56 SS | 111d | 0d | 21,017.55 |  |
| C-MEP-E-376 |  | Installation of Electrical Second Fix (Cabling & Wirring etc..). at Ground Mezzanine level | 18d | 2015-05-07 | 2015-05-27 | C-MEP-E-366, C-MEP-E-416, C-MEP-E-16 SS | 125d | 13d | 190,528.33 | GEN |
| C-MEP-E-386 |  | Installation & Connection of Electrical DB's, SMDB's & MCC's at Ground Mezzanine level | 16d | 2015-07-29 | 2015-08-16 | C-MEP-E-376, C-MEP-E-26 SS | 96d | 0d | 130,780.17 | GEN |
| C-MEP-E-406 |  | Installation & Connection of Lighting FIxtures & Sockets at Ground Mezzanine level | 14d | 2016-05-25 | 2016-06-09 | C-MEP-E-376, C-F-CF-457, C-F-CF-447, C-F-WF-254, C-F-WF-264, C-MEP-E-36, C-F-P-LSF-92 FF | 86d | 0d | 71,857.69 | GEN |
|  | 2 | **HVAC** |  | 2015-03-24 | 2016-05-24 |  |  |  |  |  |
| C-MEP-AC-488 |  | Installation of Ductwork, Insulation & Dampers at Ground Mezzanine level | 23d | 2015-03-24 | 2015-04-19 | C-F-P-183 SS, SD-CS-GF-172, C-MEP-AC-8 | 107d | 0d | 207,402.82 | GEN |
| C-MEP-AC-538 |  | Pressure testing of Ductwork at Ground Mezzanine level | 8d | 2015-04-20 | 2015-04-28 | C-MEP-AC-488, C-MEP-AC-58 | 128d | 0d |  | GEN |
| C-MEP-AC-508 |  | Installation of Chilled Water Pipes & Valves at Ground Mezzanine level | 25d | 2015-04-21 | 2015-05-19 | C-MEP-AC-488 SS+10d, C-MEP-AC-28 SS | 120d | 0d | 47,430.4 | GEN |
| C-MEP-AC-528 |  | Pressure testing & Insulation of Chilled Water Pipes at Ground Mezzanine level | 12d | 2015-06-03 | 2015-06-16 | C-MEP-AC-508, C-MEP-AC-48 | 121d | 0d | 8,821.1 | GEN |
| C-MEP-AC-518 |  | Installation of Chilled Water Pipes Control Devices & Isolator at Ground Mezzanine level | 8d | 2015-06-17 | 2015-06-25 | C-MEP-AC-528, C-MEP-AC-38 | 133d | 4d | 2,889.38 | GEN |
| C-MEP-AC-498 |  | Installation of Silencers, Attenuators, Isolators & Detectors at Ground Mezzanine level | 12d | 2015-08-19 | 2015-09-01 | C-MEP-AC-538, C-MEP-AC-18 SS | 130d | 0d | 41,704.9 | GEN |
| C-MEP-AC-548 |  | Installation of HVAC equipments AHU's, FCU's, ERU's, VAV's, CAV's & Fans at Ground Mezzanine level | 25d | 2015-08-22 | 2015-09-19 | C-MEP-AC-538 FF, C-MEP-AC-528 FF, C-MEP-AC-488 SS, C-MEP-AC-68 SS | 95d | 0d | 761,742.74 | GEN |
| C-MEP-AC-558 |  | Installation of Grilles, Diffusers & Controller at Ground Mezzanine level | 12d | 2016-05-11 | 2016-05-24 | C-MEP-AC-548, C-F-CF-457, C-F-CF-447, C-F-WF-264 FF, C-F-CF-447 FF, C-F-WF-254 FF | 148d | 0d | 55,880.87 | GEN |

Notes:
- C-ELV-SMATV-5: Expenses: 1 4452.18
- C-ELV-SMATV-45: Expenses: 1 2769.38
- C-ELV-SMATV-15: Expenses: 1 10388.4
- C-ELV-SMATV-25: Expenses: 1 6537.45
- C-ELV-SMATV-35: Expenses: 1 2419.21
- C-MEP-BMS-5: Expenses: 1 8895.95
- C-MEP-BMS-15: Expenses: 1 11861.3
- C-MEP-BMS-25: Expenses: 1 14826.6
- C-MEP-BMS-35: Expenses: 1 14826.6
- C-MEP-Gas-2875: Expenses: 1 4994.14
- C-MEP-Gas-2885: Expenses: 1 3329.43
- C-MEP-E-366: Expenses: 1 55235.7
- C-MEP-E-416: Expenses: 1 21017.5
- C-MEP-E-376: Expenses: 1 57962.7; 2 132566
- C-MEP-E-386: Expenses: 1 78921.1; 2 51859
- C-MEP-E-406: Expenses: 1 71857.7
- C-MEP-AC-488: Expenses: 1 207403
- C-MEP-AC-508: Expenses: 1 47430.4
- C-MEP-AC-528: Expenses: 1 8821.1
- C-MEP-AC-518: Expenses: 1 2889.38
- C-MEP-AC-498: Expenses: 1 41704.9
- C-MEP-AC-548: Expenses: 1 761743
- C-MEP-AC-558: Expenses: 1 55880.9

| ID | WBS | Activity | Duration | Start | Finish | Predecessors | Total float | Free float | Cost | AREA |
| --- | --- | --- | --- | --- | --- | --- | --- | --- | --- | --- |
|  | 3 | **Fire Fighting** |  | 2015-04-05 | 2015-12-16 |  |  |  |  |  |
| C-MEP-FF-244 |  | Installation of FIre fighting Pipes at Ground Mezzanine level | 25d | 2015-04-05 | 2015-05-03 | C-MEP-AC-488 SS+10d, SD-CS-GF-192 | 107d | 0d | 9,346.78 | GEN |
| C-MEP-FF-264 |  | Pressure testing of fire fighting pipes at Ground Mezzanine level | 8d | 2015-05-04 | 2015-05-12 | C-MEP-FF-244, C-MEP-FF-24 | 107d | 0d | 5,280.67 | GEN |
| C-MEP-FF-254 |  | Installation of fire Fighting Valves at Ground Mezzanine level | 20d | 2015-05-25 | 2015-06-16 | C-MEP-FF-264, C-MEP-FF-14 | 97d | 0d | 3,365.53 | GEN |
| C-MEP-FF-274 |  | Installation of Fire Fighting Sprinklers & Fire hose Cabinets & Extinguishers at Ground Mezzanine level | 14d | 2015-12-01 | 2015-12-16 | C-MEP-FF-254, C-F-CF-447, C-F-CF-437, C-MEP-FF-264, C-MEP-FF-34 | 116d | 0d | 19,555.13 | GEN |
|  | 4 | **Plumbing & Drainage** |  | 2015-04-05 | 2016-05-18 |  |  |  |  |  |
| C-MEP-PD-305 |  | Installation of Water Pipes & Valves (Hot & Cold atc..) at Ground Mezzanine level | 20d | 2015-04-05 | 2015-04-27 | C-MEP-FF-244 SS, C-F-P-193, SD-CS-GF-232 | 116d | 0d | 16,945.33 | GEN |
| C-MEP-PD-315 |  | Installation drainage Pipes at Ground Mezzanine level | 25d | 2015-04-25 | 2015-05-23 | C-MEP-PD-305 SS, C-MEP-PD-15 | 102d | 0d | 5,846.01 | GEN |
| C-MEP-PD-325 |  | Pressure testing & Insullation of water pipes at Ground Mezzanine level | 8d | 2015-04-28 | 2015-05-06 | C-MEP-PD-305, C-MEP-PD-25 | 165d | 0d | 9,573.63 | GEN |
| C-MEP-PD-335 |  | Pressure testing of drainage pipes at Ground Mezzanine level | 8d | 2015-05-24 | 2015-06-01 | C-MEP-PD-315, C-MEP-PD-35 | 162d | 17d | 1,651.42 | GEN |
| C-MEP-PD-345 |  | Installation of Outlets, Drains, Gullies, Cowls, & Clean out at Ground Mezzanine level | 20d | 2016-04-26 | 2016-05-18 | C-MEP-PD-325, C-MEP-PD-325 FF, C-F-FF-254, C-F-WF-254, C-F-FF-254 FF, C-F-WF-274, C-F-WF-254 FF, C-F-DW-254, C-F-P-LSF-92 FF | 149d | 0d | 2,396.26 | GEN |
|  | 7 | **ELV systems** |  | 2015-04-19 | 2015-11-17 |  |  |  |  |  |
|  | 1 | **Room Management System** |  | 2015-04-19 | 2015-10-22 |  |  |  |  |  |
| C-ELV-RMS-305 |  | Installation of RMS first fix (Conduits, Boxes within block work , Gypsum Boards & Raised FLooring at G Mezz. level | 20d | 2015-04-19 | 2015-05-11 | C-F-P-193, C-F-P-183, SD-CS-GF-412, C-ELV-RMS-5 | 110d | 0d | 11,902.78 | GEN |
| C-ELV-RMS-345 |  | Installation of Cable Trays & Truncking at G Mezz. level | 25d | 2015-04-30 | 2015-05-28 | C-ELV-CS-345 SS+5d, C-ELV-RMS-45 SS | 117d | 0d | 2,769.38 |  |
| C-ELV-RMS-315 |  | Installation of second fix (Cabling & Wirring etc..) at G Mezz. level | 25d | 2015-05-30 | 2015-06-27 | C-ELV-RMS-305, C-ELV-RMS-345 | 195d | 0d | 11,902.78 | GEN |
| C-ELV-RMS-325 |  | Installation & Connection of ethernets & HVAC thermostates etc.. at G Mezz. level | 25d | 2015-06-28 | 2015-07-28 | C-ELV-RMS-315 | 195d | 51d | 27,773.16 | GEN |
| C-ELV-RMS-335 |  | Installtion & Connection of Panels, Controller, switches, server etc..) at G Mezz. level | 20d | 2015-09-30 | 2015-10-22 | C-ELV-RMS-325, C-ELV-RMS-35 | 175d | 0d | 27,773.16 |  |
|  | 12 | **Fire Alarm & Detection System** |  | 2015-04-19 | 2015-10-21 |  |  |  |  |  |
| C-ELV-FA-305 |  | Installation of FA first Fix Conduits, Boxes within block work , Gypsum Boards & Raised FLooring at G Mezz. level | 20d | 2015-04-19 | 2015-05-11 | C-F-P-193, C-F-P-183, C-ELV-FA-5 | 115d | 0d | 13,660.92 | GEN |
| C-ELV-FA-345 |  | Installation of Cable Trays & Truncking at G Mezz. level | 25d | 2015-05-12 | 2015-06-09 | C-ELV-MSPA-345 SS+5d, SD-CS-GF-452 | 183d | 0d | 2,769.38 |  |
| C-ELV-FA-315 |  | Installation of second fix (Cabling & Wirring etc..) at G Mezz. level | 20d | 2015-06-10 | 2015-07-02 | C-ELV-FA-305, C-ELV-FA-345 | 190d | 0d | 22,768.2 | GEN |
| C-ELV-FA-325 |  | Installation & Connection of heat detector, smoke detector, flame detector etc.. at G Mezz. level | 25d | 2015-07-04 | 2015-08-03 | C-ELV-FA-315 | 190d | 45d | 27,321.84 | GEN |
| C-ELV-FA-335 |  | Installtion & Connection of Racks & Panels at G Mezz. level | 20d | 2015-09-29 | 2015-10-21 | C-ELV-FA-325, C-ELV-FA-35 | 156d | 0d | 27,321.84 |  |

Notes:
- C-MEP-FF-244: Expenses: 1 9346.78
- C-MEP-FF-264: Expenses: 1 5280.67
- C-MEP-FF-254: Expenses: 1 3365.53
- C-MEP-FF-274: Expenses: 1 19555.1
- C-MEP-PD-305: Expenses: 1 16945.3
- C-MEP-PD-315: Expenses: 1 5846.01
- C-MEP-PD-325: Expenses: 1 9573.63
- C-MEP-PD-335: Expenses: 1 1651.42
- C-MEP-PD-345: Expenses: 1 2396.26
- C-ELV-RMS-305: Expenses: 1 11902.8
- C-ELV-RMS-345: Expenses: 1 2769.38
- C-ELV-RMS-315: Expenses: 1 11902.8
- C-ELV-RMS-325: Expenses: 1 27773.2
- C-ELV-RMS-335: Expenses: 1 27773.2
- C-ELV-FA-305: Expenses: 1 13660.9
- C-ELV-FA-345: Expenses: 1 2769.38
- C-ELV-FA-315: Expenses: 1 22768.2
- C-ELV-FA-325: Expenses: 1 27321.8
- C-ELV-FA-335: Expenses: 1 27321.8

| ID | WBS | Activity | Duration | Start | Finish | Predecessors | Total float | Free float | Cost | AREA |
| --- | --- | --- | --- | --- | --- | --- | --- | --- | --- | --- |
|  | 2 | **Music System & Public Address System** |  | 2015-04-19 | 2015-09-19 |  |  |  |  |  |
| C-ELV-MSPA-305 |  | Installation of MS/PA first fix (Conduits, Boxes within block work, Gypsum Boards & Raised FLooring at G Mezz. level | 20d | 2015-04-19 | 2015-05-11 | C-F-P-193, C-F-P-183, SD-CS-GF-432, C-ELV-MSPA-5 | 62d | 0d | 6,994.34 | GEN |
| C-ELV-MSPA-345 |  | Installation of Cable Trays & Truncking at G Mezz. level | 25d | 2015-05-06 | 2015-06-03 | C-ELV-RMS-345 SS+5d | 117d | 0d | 2,769.38 |  |
| C-ELV-MSPA-315 |  | Installation of second fix (Cabling & Wirring etc..) at G Mezz. level | 25d | 2015-06-04 | 2015-07-02 | C-ELV-MSPA-305, C-ELV-MSPA-345 | 190d | 0d | 6,994.34 | GEN |
| C-ELV-MSPA-325 |  | Installation & Connection of speakers, Amplifier & Controller at G Mezz. level | 25d | 2015-07-04 | 2015-08-03 | C-ELV-MSPA-315 | 190d | 20d | 16,320.12 | GEN |
| C-ELV-MSPA-335 |  | Installtion & Connection of Media hub, panels and processor at G Mezz. level | 20d | 2015-08-27 | 2015-09-19 | C-ELV-MSPA-325, C-ELV-MSPA-35 | 201d | 0d | 16,320.12 |  |
|  | 3 | **IP CCTV & Access Control System** |  | 2015-04-19 | 2015-10-13 |  |  |  |  |  |
| C-ELV-CCTV-305 |  | Installation of CCTV first Fix Conduits, Boxes within block work, Gypsum Boards & Raised FLooring at G Mezz. level | 20d | 2015-04-19 | 2015-05-11 | C-F-P-193, C-F-P-183, SD-CS-GF-472, C-ELV-CCTV-5 | 122d | 0d | 8,161.35 | GEN |
| C-ELV-CCTV-345 |  | Installation of Cable Trays & Truncking at G Mezz. level | 25d | 2015-05-18 | 2015-06-15 | C-ELV-FA-345 SS+5d | 183d | 0d | 2,769.38 |  |
| C-ELV-CCTV-315 |  | Installation of second fix (Cabling & Wirring etc..) at G Mezz. level | 20d | 2015-06-16 | 2015-07-08 | C-ELV-CCTV-305, C-ELV-CCTV-345 | 183d | 0d | 19,043.14 | GEN |
| C-ELV-CCTV-325 |  | Installation & Connection of Camera's & Alarms at G Mezz. level | 18d | 2015-07-09 | 2015-08-01 | C-ELV-CCTV-315 | 183d | 60d | 183,698.91 | GEN |
| C-ELV-CCTV-335 |  | Installtion & Connection of Racks, Panels etc... at G Mezz. level | 25d | 2015-09-12 | 2015-10-13 | C-ELV-CCTV-325 FF, C-ELV-CCTV-35 | 123d | 0d | 7,322.52 |  |
|  | 7 | **Communication System** |  | 2015-04-19 | 2015-11-17 |  |  |  |  |  |
| C-ELV-CS-305 |  | Installation of CS first fix (Conduits, Boxes within block work, Gypsum Boards & Raised FLooring at G Mezz. level | 20d | 2015-04-19 | 2015-05-11 | C-F-P-193, C-F-P-183, SD-CS-GF-392, C-ELV-CS-5 | 119d | 0d | 27,356.12 | GEN |
| C-ELV-CS-345 |  | Installation of Cable Trays & Truncking at G Mezz. level | 18d | 2015-04-25 | 2015-05-14 | C-MEP-E-416 SS, C-ELV-CS-45 SS | 117d | 0d | 2,769.38 |  |
| C-ELV-CS-315 |  | Installation of second fix (Cabling & Wirring etc..) at G Mezz. level | 25d | 2015-06-14 | 2015-07-12 | C-ELV-CS-305, C-ELV-CS-345, C-ELV-CS-15 | 106d | 0d | 82,068.35 | GEN |
| C-ELV-CS-325 |  | Installation & Connection of Wireless Access points & IP dect phone & RJ 45 at G Mezz. level | 25d | 2015-07-13 | 2015-08-12 | C-ELV-CS-315 | 131d | 25d | 93,342.54 | GEN |
| C-ELV-CS-335 |  | Installtion & Connection of Controller & Instrumentation at G Mezz. level | 20d | 2015-10-26 | 2015-11-17 | C-ELV-CS-325, C-ELV-CS-35 | 125d | 0d | 223,314.69 |  |
|  | 4 | **IP, SMATV & QAM Television System** |  | 2015-04-19 | 2015-11-01 |  |  |  |  |  |
| C-ELV-SMATV-305 |  | Installation of SMATV first Fix Conduits, Boxes within block work , Gypsum Boards & Raised FLooring at G Mezz. level | 20d | 2015-04-19 | 2015-05-11 | C-F-P-193, C-F-P-183, SD-CS-GF-492, C-ELV-SMATV-5 | 126d | 0d | 4,452.18 | GEN |
| C-ELV-SMATV-345 |  | Installation of Cable Trays & Truncking at G Mezz. level | 25d | 2015-05-24 | 2015-06-21 | C-ELV-CCTV-345 SS+5d | 189d | 0d | 2,769.38 |  |
| C-ELV-SMATV-315 |  | Installation of second fix (Cabling & Wirring etc..) at G Mezz. level | 16d | 2015-06-22 | 2015-07-09 | C-ELV-SMATV-305, C-ELV-SMATV-345 | 191d | 0d | 10,388.41 | GEN |
| C-ELV-SMATV-325 |  | Installation & Connection of Outlets, switches and splitter at G Mezz. level | 18d | 2015-07-11 | 2015-08-02 | C-ELV-SMATV-315 | 191d | 55d | 6,537.45 | GEN |
| C-ELV-SMATV-335 |  | Installtion & Connection of SMATV & QAM fiber & receiver at G Mezz. level | 20d | 2015-10-10 | 2015-11-01 | C-ELV-SMATV-325, C-ELV-SMATV-35 | 167d | 0d | 2,419.21 |  |

Notes:
- C-ELV-MSPA-305: Expenses: 1 6994.34
- C-ELV-MSPA-345: Expenses: 1 2769.38
- C-ELV-MSPA-315: Expenses: 1 6994.34
- C-ELV-MSPA-325: Expenses: 1 16320.1
- C-ELV-MSPA-335: Expenses: 1 16320.1
- C-ELV-CCTV-305: Expenses: 1 8161.35
- C-ELV-CCTV-345: Expenses: 1 2769.38
- C-ELV-CCTV-315: Expenses: 1 19043.1
- C-ELV-CCTV-325: Expenses: 1 183699
- C-ELV-CCTV-335: Expenses: 1 7322.52
- C-ELV-CS-305: Expenses: 1 27356.1
- C-ELV-CS-345: Expenses: 1 2769.38
- C-ELV-CS-315: Expenses: 1 82068.4
- C-ELV-CS-325: Expenses: 1 93342.5
- C-ELV-CS-335: Expenses: 1 223315
- C-ELV-SMATV-305: Expenses: 1 4452.18
- C-ELV-SMATV-345: Expenses: 1 2769.38
- C-ELV-SMATV-315: Expenses: 1 10388.4
- C-ELV-SMATV-325: Expenses: 1 6537.45
- C-ELV-SMATV-335: Expenses: 1 2419.21

| ID | WBS | Activity | Duration | Start | Finish | Predecessors | Total float | Free float | Cost | AREA |
| --- | --- | --- | --- | --- | --- | --- | --- | --- | --- | --- |
|  | 5 | **BMS system** |  | 2015-04-19 | 2015-12-01 |  |  |  |  |  |
| C-MEP-BMS-305 |  | Installation of BMS first Fix Conduits, Boxes within block work , Gypsum Boards & Raised Flooring at G Mezz. level | 20d | 2015-04-19 | 2015-05-11 | C-F-P-193, C-F-P-183, SD-CS-GF-372, C-MEP-BMS-5 | 119d | 0d | 8,895.95 | GEN |
| C-MEP-BMS-345 |  | Installation of Cable trays & Trunking at G Mezz. level | 20d | 2015-05-30 | 2015-06-21 | C-ELV-SMATV-345 SS+5d | 189d | 0d |  |  |
| C-MEP-BMS-315 |  | Installation of BMS Cabling & Wirring at G Mezz. level | 16d | 2015-06-22 | 2015-07-09 | C-MEP-BMS-305, C-MEP-BMS-345 | 189d | 59d | 11,861.27 | GEN |
| C-MEP-BMS-325 |  | Installation & Connection of BMS Sensors, Relays, & Valves at G Mezz. level | 20d | 2015-09-23 | 2015-10-15 | C-MEP-BMS-315, C-MEP-PD-335, C-MEP-PD-325, C-MEP-FF-254, C-MEP-AC-548, C-MEP-AC-528, C-MEP-AC-538 | 130d | 0d | 14,826.58 | GEN |
| C-MEP-BMS-335 |  | Installtion & Connection of BMS Racks, Panels etc... at G Mezz. level | 20d | 2015-11-09 | 2015-12-01 | C-MEP-BMS-325, C-MEP-BMS-35 | 191d | 0d | 14,826.58 |  |
|  | 51 | **MEP - Level 1** |  | 2015-03-24 | 2016-08-21 |  |  |  |  |  |
|  | 1 | **Electrical** |  | 2015-04-18 | 2016-06-26 |  |  |  |  |  |
| C-MEP-E-116 |  | Installation of Cable Trays & Truncking at Level 1 | 18d | 2015-04-18 | 2015-05-07 | C-MEP-FF-44 SS+10d, C-MEP-PD-55 SS+5d, C-MEP-E-416 SS | 110d | 0d | 21,017.55 |  |
| C-MEP-E-66 |  | Installation of first Electrical Fix Conduits, Boxes within block work & Gypsum Boards at Level 1 | 20d | 2015-04-29 | 2015-05-21 | C-F-P-33, C-MEP-E-366 | 104d | 0d | 55,235.7 | GEN |
| C-MEP-E-76 |  | Installation of Electrical Second Fix (Cabling & Wirring etc..). at Level 1 | 18d | 2015-05-23 | 2015-06-11 | C-MEP-E-66, C-MEP-E-116, C-MEP-E-376 SS | 112d | 2d | 190,528.33 | GEN |
| C-MEP-E-86 |  | Installation & Connection of Electrical DB's, SMDB's at Level 1 | 16d | 2015-07-29 | 2015-08-16 | C-MEP-E-76, C-MEP-E-386 SS | 96d | 0d | 78,921.15 | GEN |
| C-MEP-E-106 |  | Installation & Connection of Lighting Fixtures & Sockets at Level 1 | 14d | 2016-06-11 | 2016-06-26 | C-MEP-E-76, C-F-CF-107, C-F-CF-97, C-F-WF-64, C-F-WF-54, C-MEP-E-406, C-F-P-LSF-02 FF | 86d | 0d | 71,857.69 | GEN |
|  | 2 | **HVAC** |  | 2015-03-24 | 2016-03-09 |  |  |  |  |  |
| C-MEP-AC-88 |  | Installation of Ductwork, Insulation & Dampers at Level 1 | 23d | 2015-03-24 | 2015-04-19 | C-F-P-33 SS, SD-CS-L1-192, C-MEP-AC-488 SS | 111d | 0d | 140,612.08 | GEN |
| C-MEP-AC-108 |  | Installation of Chilled Water Pipes & Valves at Level 1 | 25d | 2015-04-21 | 2015-05-19 | C-MEP-AC-88 SS+10d, C-MEP-AC-508 SS | 120d | 0d | 30,741.92 | GEN |
| C-MEP-AC-138 |  | Pressure testing of Ductwork at Level 1 | 8d | 2015-04-29 | 2015-05-07 | C-MEP-AC-88, C-MEP-AC-538 | 208d | 86d |  | GEN |
| C-MEP-AC-128 |  | Pressure testing & Insulation of Chilled Water Pipes at Level 1 | 12d | 2015-06-17 | 2015-06-30 | C-MEP-AC-108, C-MEP-AC-528 | 121d | 0d | 8,821.1 | GEN |
| C-MEP-AC-118 |  | Installation of Chilled Water Pipes Control Devices & Isolator at Level 1 | 8d | 2015-07-01 | 2015-07-09 | C-MEP-AC-128, C-MEP-AC-518 | 129d | 4d | 2,889.38 | GEN |
| C-MEP-AC-98 |  | Installation of Silencers, Attenuators, Isolators & Detectors at Level 1 | 12d | 2015-08-19 | 2015-09-01 | C-MEP-AC-138, C-MEP-AC-498 SS | 130d | 0d | 28,274.51 | GEN |
| C-MEP-AC-148 |  | Installation of HVAC equipments AHU's, FCU's, ERU's, VAV's, CAV's & Fans at Level 1 | 25d | 2015-08-22 | 2015-09-19 | C-MEP-AC-138 FF, C-MEP-AC-128 FF, C-MEP-AC-88 SS, C-MEP-AC-548 SS | 95d | 0d | 366,983.97 | GEN |
| C-MEP-AC-158 |  | Installation of Grilles, Diffusers & Controller at Level 1 | 12d | 2016-02-25 | 2016-03-09 | C-MEP-AC-148, C-F-CF-107, C-F-CF-97, C-F-WF-64 FF, C-F-CF-97 FF, C-F-WF-54 FF | 219d | 29d | 55,880.87 | GEN |
|  | 3 | **Fire Fighting** |  | 2015-04-05 | 2016-01-03 |  |  |  |  |  |
| C-MEP-FF-44 |  | Installation of FIre fighting Pipes at Level 1 | 25d | 2015-04-05 | 2015-05-03 | C-MEP-AC-88 SS+10d, SD-CS-L1-212 | 111d | 1d | 45,406.88 | GEN |
| C-MEP-FF-64 |  | Pressure testing of fire fighting pipes at Level 1 | 8d | 2015-05-13 | 2015-05-21 | C-MEP-FF-44, C-MEP-FF-264 | 111d | 0d | 5,280.67 | GEN |
| C-MEP-FF-54 |  | Installation of fire Fighting Valves at Level 1 | 20d | 2015-06-17 | 2015-07-09 | C-MEP-FF-64, C-MEP-FF-254 | 97d | 0d | 18,427.34 | GEN |
| C-MEP-FF-74 |  | Installation of Fire Fighting Sprinklers & Fire hose Cabinets & Extinguishers at Level 1 | 14d | 2015-12-17 | 2016-01-03 | C-MEP-FF-54, C-F-CF-97, C-F-CF-87, C-MEP-FF-64, C-MEP-FF-274 | 116d | 0d | 64,097.37 | GEN |

Notes:
- C-MEP-BMS-305: Expenses: 1 8895.95
- C-MEP-BMS-315: Expenses: 1 11861.3
- C-MEP-BMS-325: Expenses: 1 14826.6
- C-MEP-BMS-335: Expenses: 1 14826.6
- C-MEP-E-116: Expenses: 1 21017.5
- C-MEP-E-66: Expenses: 1 55235.7
- C-MEP-E-76: Expenses: 1 57962.7; 2 132566
- C-MEP-E-86: Expenses: 1 78921.1
- C-MEP-E-106: Expenses: 1 71857.7
- C-MEP-AC-88: Expenses: 1 140612
- C-MEP-AC-108: Expenses: 1 30741.9
- C-MEP-AC-128: Expenses: 1 8821.1
- C-MEP-AC-118: Expenses: 1 2889.38
- C-MEP-AC-98: Expenses: 1 28274.5
- C-MEP-AC-148: Expenses: 1 366984
- C-MEP-AC-158: Expenses: 1 55880.9
- C-MEP-FF-44: Expenses: 1 45406.9
- C-MEP-FF-64: Expenses: 1 5280.67
- C-MEP-FF-54: Expenses: 1 18427.3
- C-MEP-FF-74: Expenses: 1 64097.4

| ID | WBS | Activity | Duration | Start | Finish | Predecessors | Total float | Free float | Cost | AREA |
| --- | --- | --- | --- | --- | --- | --- | --- | --- | --- | --- |
|  | 4 | **Plumbing & Drainage** |  | 2015-04-12 | 2016-03-03 |  |  |  |  |  |
| C-MEP-PD-55 |  | Installation of Hot & Cold Water pipes at Level 1 | 20d | 2015-04-12 | 2015-05-04 | C-MEP-FF-44 SS, C-F-P-43, SD-CS-L1-252 | 110d | 0d |  | GEN |
| C-MEP-PD-75 |  | Pressure testing & Insullation of water pipes at Level 1 | 8d | 2015-05-07 | 2015-05-16 | C-MEP-PD-55, C-MEP-PD-325 | 165d | 0d | 9,573.63 | GEN |
| C-MEP-PD-65 |  | Installation drainage Pipes at Level 1 | 25d | 2015-05-24 | 2015-06-21 | C-MEP-PD-55 SS, C-MEP-PD-315 | 102d | 0d | 30,204.4 | GEN |
| C-MEP-PD-85 |  | Pressure testing of drainage pipes at Level 1 | 8d | 2015-06-22 | 2015-06-30 | C-MEP-PD-65, C-MEP-PD-335 | 145d | 0d | 1,651.42 | GEN |
| C-MEP-PD-95 |  | Installation of Outlets, Drains, Gullies, Cowls, & Clean out at Level 1 | 20d | 2016-02-09 | 2016-03-03 | C-MEP-PD-75, C-MEP-PD-75 FF, C-F-FF-54, C-F-WF-54, C-F-FF-54 FF, C-F-WF-74, C-F-WF-54 FF, C-F-DW-54, C-F-P-LSF-02 FF | 214d | 40d | 13,120.28 | GEN |
|  | 7 | **ELV systems** |  | 2015-04-25 | 2015-12-10 |  |  |  |  |  |
|  | 1 | **Room Management System** |  | 2015-05-06 | 2015-11-15 |  |  |  |  |  |
| C-ELV-RMS-95 |  | Installation of Cable Trays & Truncking at Level 1 | 25d | 2015-05-06 | 2015-06-03 | C-ELV-CS-95 SS+5d, C-ELV-MSPA-345 SS | 117d | 0d | 2,769.38 |  |
| C-ELV-RMS-55 |  | Installation of RMS first fix (Conduits, Boxes within block work , Gypsum Boards & Raised FLooring at Level 1 | 20d | 2015-05-12 | 2015-06-03 | C-F-P-43, C-F-P-33, SD-CS-L1-432, C-ELV-RMS-305 | 110d | 0d | 11,902.78 | GEN |
| C-ELV-RMS-65 |  | Installation of second fix (Cabling & Wirring etc..) at Level 1 | 25d | 2015-06-04 | 2015-07-02 | C-ELV-RMS-55, C-ELV-RMS-95 | 155d | 0d | 11,902.78 | GEN |
| C-ELV-RMS-75 |  | Installation & Connection of ethernets & HVAC thermostates etc.. at Level 1 | 25d | 2015-07-04 | 2015-08-03 | C-ELV-RMS-65 | 155d | 60d | 27,773.16 | GEN |
| C-ELV-RMS-85 |  | Installtion & Connection of Panels, Controller, switches, server etc..) at Level 1 | 20d | 2015-10-24 | 2015-11-15 | C-ELV-RMS-75, C-ELV-RMS-335 | 175d | 0d | 27,773.16 |  |
|  | 12 | **Fire Alarm & Detection System** |  | 2015-05-12 | 2015-11-14 |  |  |  |  |  |
| C-ELV-FA-55 |  | Installation of FA first Fix Conduits, Boxes within block work , Gypsum Boards & Raised FLooring at Level 1 | 20d | 2015-05-12 | 2015-06-03 | C-F-P-43, C-F-P-33, C-ELV-FA-305 | 115d | 0d | 13,660.92 | GEN |
| C-ELV-FA-95 |  | Installation of Cable Trays & Truncking at Level 1 | 25d | 2015-05-18 | 2015-06-15 | C-ELV-MSPA-95 SS+5d, SD-CS-L1-472 | 149d | 0d | 2,769.38 |  |
| C-ELV-FA-65 |  | Installation of second fix (Cabling & Wirring etc..) at Level 1 | 20d | 2015-06-16 | 2015-07-08 | C-ELV-FA-55, C-ELV-FA-95 | 150d | 0d | 22,768.2 | GEN |
| C-ELV-FA-75 |  | Installation & Connection of heat detector, smoke detector, flame detector etc.. at Level 1 | 25d | 2015-07-09 | 2015-08-09 | C-ELV-FA-65 | 150d | 55d | 27,321.84 | GEN |
| C-ELV-FA-85 |  | Installtion & Connection of Racks & Panels at Level 1 | 20d | 2015-10-22 | 2015-11-14 | C-ELV-FA-75, C-ELV-FA-335 | 156d | 0d | 27,321.84 |  |
|  | 2 | **Music System & Public Address System** |  | 2015-05-12 | 2015-09-19 |  |  |  |  |  |
| C-ELV-MSPA-55 |  | Installation of MS/PA first fix (Conduits, Boxes within block work, Gypsum Boards & Raised FLooring at Level 1 | 20d | 2015-05-12 | 2015-06-03 | C-F-P-43, C-F-P-33, SD-CS-L1-452, C-ELV-MSPA-305 | 62d | 0d | 6,994.34 | GEN |
| C-ELV-MSPA-95 |  | Installation of Cable Trays & Truncking at Level 1 | 25d | 2015-05-12 | 2015-06-09 | C-ELV-RMS-95 SS+5d | 149d | 0d | 2,769.38 |  |
| C-ELV-MSPA-65 |  | Installation of second fix (Cabling & Wirring etc..) at Level 1 | 25d | 2015-06-10 | 2015-07-08 | C-ELV-MSPA-55, C-ELV-MSPA-95 | 150d | 0d | 6,994.34 | GEN |
| C-ELV-MSPA-75 |  | Installation & Connection of speakers, Amplifier & Controller at Level 1 | 25d | 2015-07-09 | 2015-08-09 | C-ELV-MSPA-65 | 150d | 15d | 16,320.12 | GEN |
| C-ELV-MSPA-85 |  | Installtion & Connection of Media hub, panels and processor at Level 1 | 20d | 2015-08-27 | 2015-09-19 | C-ELV-MSPA-75, C-ELV-MSPA-335 SS | 201d | 0d | 16,320.12 |  |

Notes:
- C-MEP-PD-75: Expenses: 1 9573.63
- C-MEP-PD-65: Expenses: 1 30204.4
- C-MEP-PD-85: Expenses: 1 1651.42
- C-MEP-PD-95: Expenses: 1 13120.3
- C-ELV-RMS-95: Expenses: 1 2769.38
- C-ELV-RMS-55: Expenses: 1 11902.8
- C-ELV-RMS-65: Expenses: 1 11902.8
- C-ELV-RMS-75: Expenses: 1 27773.2
- C-ELV-RMS-85: Expenses: 1 27773.2
- C-ELV-FA-55: Expenses: 1 13660.9
- C-ELV-FA-95: Expenses: 1 2769.38
- C-ELV-FA-65: Expenses: 1 22768.2
- C-ELV-FA-75: Expenses: 1 27321.8
- C-ELV-FA-85: Expenses: 1 27321.8
- C-ELV-MSPA-55: Expenses: 1 6994.34
- C-ELV-MSPA-95: Expenses: 1 2769.38
- C-ELV-MSPA-65: Expenses: 1 6994.34
- C-ELV-MSPA-75: Expenses: 1 16320.1
- C-ELV-MSPA-85: Expenses: 1 16320.1

| ID | WBS | Activity | Duration | Start | Finish | Predecessors | Total float | Free float | Cost | AREA |
| --- | --- | --- | --- | --- | --- | --- | --- | --- | --- | --- |
|  | 3 | **IP CCTV & Access Control System** |  | 2015-05-12 | 2015-11-11 |  |  |  |  |  |
| C-ELV-CCTV-55 |  | Installation of CCTV first Fix Conduits, Boxes within block work, Gypsum Boards & Raised FLooring at Level 1 | 20d | 2015-05-12 | 2015-06-03 | C-F-P-43, C-F-P-33, SD-CS-L1-492, SD-CS-L1-512, C-ELV-CCTV-305 | 122d | 0d | 8,161.35 | GEN |
| C-ELV-CCTV-95 |  | Installation of Cable Trays & Truncking at Level 1 | 25d | 2015-05-24 | 2015-06-21 | C-ELV-FA-95 SS+5d | 149d | 0d | 2,769.38 |  |
| C-ELV-CCTV-65 |  | Installation of second fix (Cabling & Wirring etc..) at Level 1 | 20d | 2015-06-22 | 2015-07-14 | C-ELV-CCTV-55, C-ELV-CCTV-95 | 152d | 0d | 19,043.14 | GEN |
| C-ELV-CCTV-75 |  | Installation & Connection of Camera's & Alarms at Level 1 | 18d | 2015-07-18 | 2015-08-06 | C-ELV-CCTV-65 | 152d | 57d | 183,698.91 | GEN |
| C-ELV-CCTV-85 |  | Installtion & Connection of Racks, Panels etc... at Level 1 | 25d | 2015-10-14 | 2015-11-11 | C-ELV-CCTV-75 FF, C-ELV-CCTV-335 | 123d | 0d | 7,322.52 |  |
|  | 7 | **Communication System** |  | 2015-04-25 | 2015-12-10 |  |  |  |  |  |
| C-ELV-CS-95 |  | Installation of Cable Trays & Truncking at Level 1 | 18d | 2015-04-25 | 2015-05-14 | C-MEP-E-116 SS, C-ELV-CS-345 SS | 122d | 5d | 2,769.38 |  |
| C-ELV-CS-55 |  | Installation of CS first fix (Conduits, Boxes within block work, Gypsum Boards & Raised FLooring at Level 1 | 20d | 2015-05-12 | 2015-06-03 | C-F-P-43, C-F-P-33, SD-CS-L1-412, C-ELV-CS-305 | 119d | 0d | 27,356.12 | GEN |
| C-ELV-CS-65 |  | Installation of second fix (Cabling & Wirring etc..) at Level 1 | 25d | 2015-07-13 | 2015-08-12 | C-ELV-CS-55, C-ELV-CS-95, C-ELV-CS-315 | 106d | 0d | 82,068.35 | GEN |
| C-ELV-CS-75 |  | Installation & Connection of Wireless Access points & IP dect phone & RJ 45 at Level 1 | 25d | 2015-08-13 | 2015-09-10 | C-ELV-CS-65, C-ELV-CS-325 SS | 106d | 0d | 93,342.54 | GEN |
| C-ELV-CS-85 |  | Installtion & Connection of Controller & Instrumentation at Level 1 | 20d | 2015-11-18 | 2015-12-10 | C-ELV-CS-75, C-ELV-CS-335 | 125d | 0d | 223,314.69 |  |
|  | 4 | **IP, SMATV & QAM Television System** |  | 2015-05-12 | 2015-11-24 |  |  |  |  |  |
| C-ELV-SMATV-55 |  | Installation of SMATV first Fix Conduits, Boxes within block work , Gypsum Boards & Raised FLooring at Level 1 | 20d | 2015-05-12 | 2015-06-03 | C-F-P-43, C-F-P-33, C-ELV-SMATV-305 | 126d | 0d | 4,452.18 | GEN |
| C-ELV-SMATV-95 |  | Installation of Cable Trays & Truncking at Level 1 | 25d | 2015-05-30 | 2015-06-27 | C-ELV-CCTV-95 SS+5d | 149d | 0d | 2,769.38 |  |
| C-ELV-SMATV-65 |  | Installation of second fix (Cabling & Wirring etc..) at Level 1 | 16d | 2015-06-28 | 2015-07-18 | C-ELV-SMATV-55, C-ELV-SMATV-95 | 151d | 0d | 10,388.41 | GEN |
| C-ELV-SMATV-75 |  | Installation & Connection of Outlets, switches and splitter at Level 1 | 18d | 2015-07-19 | 2015-08-08 | C-ELV-SMATV-65 | 151d | 56d | 6,537.45 | GEN |
| C-ELV-SMATV-85 |  | Installtion & Connection of SMATV & QAM fiber & receiver at Level 1 | 20d | 2015-11-02 | 2015-11-24 | C-ELV-SMATV-75, C-ELV-SMATV-335 | 167d | 0d | 2,419.21 |  |
|  | 5 | **BMS system** |  | 2015-05-12 | 2015-12-26 |  |  |  |  |  |
| C-MEP-BMS-55 |  | Installation of BMS first Fix Conduits, Boxes within block work , Gypsum Boards & Raised FLooring at Level 1 | 20d | 2015-05-12 | 2015-06-03 | C-F-P-43, C-F-P-33, SD-CS-L1-392, C-MEP-BMS-305 | 119d | 0d | 8,895.95 | GEN |
| C-MEP-BMS-95 |  | Installation of Cable trays & Trunking at Level 1 | 20d | 2015-06-04 | 2015-06-27 | C-ELV-SMATV-95 SS+5d | 149d | 0d |  |  |
| C-MEP-BMS-65 |  | Installation of BMS Cabling & Wirring at Level 1 | 16d | 2015-06-28 | 2015-07-18 | C-MEP-BMS-55, C-MEP-BMS-95 | 149d | 54d | 11,861.27 | GEN |
| C-MEP-BMS-75 |  | Installation & Connection of BMS Sensors, Relays, & Valves at Level 1 | 20d | 2015-09-23 | 2015-10-15 | C-MEP-BMS-65, C-MEP-PD-85, C-MEP-PD-75, C-MEP-FF-54, C-MEP-AC-148, C-MEP-AC-128, C-MEP-AC-138 | 95d | 0d | 14,826.58 | GEN |
| C-MEP-BMS-85 |  | Installtion & Connection of BMS Racks, Panels etc... at Level 1 | 20d | 2015-12-02 | 2015-12-26 | C-MEP-BMS-75, C-MEP-BMS-335 | 191d | 0d | 14,826.58 |  |

Notes:
- C-ELV-CCTV-55: Expenses: 1 8161.35
- C-ELV-CCTV-95: Expenses: 1 2769.38
- C-ELV-CCTV-65: Expenses: 1 19043.1
- C-ELV-CCTV-75: Expenses: 1 183699
- C-ELV-CCTV-85: Expenses: 1 7322.52
- C-ELV-CS-95: Expenses: 1 2769.38
- C-ELV-CS-55: Expenses: 1 27356.1
- C-ELV-CS-65: Expenses: 1 82068.4
- C-ELV-CS-75: Expenses: 1 93342.5
- C-ELV-CS-85: Expenses: 1 223315
- C-ELV-SMATV-55: Expenses: 1 4452.18
- C-ELV-SMATV-95: Expenses: 1 2769.38
- C-ELV-SMATV-65: Expenses: 1 10388.4
- C-ELV-SMATV-75: Expenses: 1 6537.45
- C-ELV-SMATV-85: Expenses: 1 2419.21
- C-MEP-BMS-55: Expenses: 1 8895.95
- C-MEP-BMS-65: Expenses: 1 11861.3
- C-MEP-BMS-75: Expenses: 1 14826.6
- C-MEP-BMS-85: Expenses: 1 14826.6

| ID | WBS | Activity | Duration | Start | Finish | Predecessors | Total float | Free float | Cost | AREA |
| --- | --- | --- | --- | --- | --- | --- | --- | --- | --- | --- |
|  | 6 | **Gas System** |  | 2016-07-03 | 2016-08-21 |  |  |  |  |  |
| C-MEP-Gas-2895 |  | Installation & testing of Gas Pipes & Supports at Level 1 | 20d | 2016-07-03 | 2016-07-28 | C-MEP-PD-85, C-MEP-PD-75, C-MEP-FF-64, C-MEP-Gas-2885 | 6d | 0d | 4,994.14 | GEN |
| C-MEP-Gas-2905 |  | Installation & testing of Gas Valves at Level 1 | 20d | 2016-07-30 | 2016-08-21 | C-MEP-Gas-2895 | 6d | 0d | 3,329.43 |  |
|  | 50 | **MEP - Mezzanine Level 1** |  | 2015-03-24 | 2016-07-16 |  |  |  |  |  |
|  | 1 | **Electrical** |  | 2015-05-09 | 2016-07-16 |  |  |  |  |  |
| C-MEP-E-176 |  | Installation of Cable Trays & Truncking at Mezz level 1 | 18d | 2015-05-09 | 2015-05-28 | C-MEP-FF-84 SS+10d, C-MEP-PD-105 SS+5d, C-MEP-E-116 | 110d | 0d | 21,017.55 |  |
| C-MEP-E-126 |  | Installation of first Electrical Fix Conduits, Boxes within block work & Gypsum Boards at Mezz level 1 | 20d | 2015-05-23 | 2015-06-14 | C-F-P-63, C-MEP-E-66 | 104d | 0d | 55,235.7 | GEN |
| C-MEP-E-136 |  | Installation of Electrical Second Fix (Cabling & Wirring etc..). at Mezz level 1 | 18d | 2015-06-15 | 2015-07-05 | C-MEP-E-126, C-MEP-E-176, C-MEP-E-76 | 110d | 2d | 190,528.33 | GEN |
| C-MEP-E-146 |  | Installation & Connection of Electrical DB's, SMDB's at Mezz level 1 | 16d | 2015-07-29 | 2015-08-16 | C-MEP-E-136, C-MEP-E-86 SS | 96d | 0d | 78,921.15 | GEN |
| C-MEP-E-166 |  | Installation & Connection of Lighting Fixtures & Sockets at Mezz level 1 | 14d | 2016-06-27 | 2016-07-16 | C-MEP-E-136, C-F-CF-177, C-F-CF-167, C-F-WF-104, C-F-WF-94, C-MEP-E-106, C-F-P-LSF-12 FF | 86d | 0d | 71,857.69 | GEN |
|  | 2 | **HVAC** |  | 2015-03-24 | 2016-03-31 |  |  |  |  |  |
| C-MEP-AC-168 |  | Installation of Ductwork, Insulation & Dampers at Mezz level 1 | 23d | 2015-03-24 | 2015-04-19 | C-F-P-63 SS, C-MEP-AC-88 SS | 114d | 0d | 140,612.08 | GEN |
| C-MEP-AC-188 |  | Installation of Chilled Water Pipes & Valves at Mezz level 1 | 25d | 2015-04-21 | 2015-05-19 | C-MEP-AC-168 SS+10d, C-MEP-AC-108 SS | 120d | 0d | 30,741.92 | GEN |
| C-MEP-AC-218 |  | Pressure testing of Ductwork at Mezz level 1 | 8d | 2015-04-29 | 2015-05-07 | C-MEP-AC-168, C-MEP-AC-538 | 128d | 7d |  | GEN |
| C-MEP-AC-208 |  | Pressure testing & Insulation of Chilled Water Pipes at Mezz level 1 | 12d | 2015-07-01 | 2015-07-14 | C-MEP-AC-188, C-MEP-AC-128 | 121d | 0d | 8,821.1 | GEN |
| C-MEP-AC-198 |  | Installation of Chilled Water Pipes Control Devices & Isolator at Mezz level 1 | 8d | 2015-07-18 | 2015-07-26 | C-MEP-AC-208, C-MEP-AC-118 | 125d | 4d | 2,889.38 | GEN |
| C-MEP-AC-178 |  | Installation of Silencers, Attenuators, Isolators & Detectors at Mezz level 1 | 12d | 2015-08-19 | 2015-09-01 | C-MEP-AC-218, C-MEP-AC-98 SS | 131d | 0d | 28,274.51 | GEN |
| C-MEP-AC-228 |  | Installation of HVAC equipments AHU's, FCU's, ERU's, VAV's, CAV's & Fans at Mezz level 1 | 25d | 2015-08-22 | 2015-09-19 | C-MEP-AC-218 FF, C-MEP-AC-208 FF, C-MEP-AC-168 SS, C-MEP-AC-148 SS | 96d | 0d | 39,827.72 | GEN |
| C-MEP-AC-238 |  | Installation of Grilles, Diffusers & Controller at Mezz level 1 | 12d | 2016-03-19 | 2016-03-31 | C-MEP-AC-228, C-F-CF-177, C-F-CF-167, C-F-WF-104 FF, C-F-CF-167 FF, C-F-WF-94 FF | 194d | 29d | 55,880.87 | GEN |
|  | 3 | **Fire Fighting** |  | 2015-04-05 | 2016-01-19 |  |  |  |  |  |
| C-MEP-FF-84 |  | Installation of FIre fighting Pipes at Mezz level 1 | 25d | 2015-04-05 | 2015-05-03 | C-MEP-AC-168 SS+10d | 127d | 13d | 45,406.88 | GEN |
| C-MEP-FF-104 |  | Pressure testing of fire fighting pipes at Mezz level 1 | 8d | 2015-05-23 | 2015-05-31 | C-MEP-FF-84, C-MEP-FF-64 | 111d | 0d | 5,280.67 | GEN |
| C-MEP-FF-94 |  | Installation of fire Fighting Valves at Mezz level 1 | 20d | 2015-06-17 | 2015-07-09 | C-MEP-FF-104, C-MEP-FF-54 SS | 97d | 0d | 18,427.34 | GEN |
| C-MEP-FF-114 |  | Installation of Fire Fighting Sprinklers & Fire hose Cabinets & Extinguishers at Mezz level 1 | 14d | 2016-01-04 | 2016-01-19 | C-MEP-FF-94, C-F-CF-167, C-F-CF-157, C-MEP-FF-104, C-MEP-FF-74 | 116d | 0d | 64,097.37 | GEN |

Notes:
- C-MEP-Gas-2895: Expenses: 1 4994.14
- C-MEP-Gas-2905: Expenses: 1 3329.43
- C-MEP-E-176: Expenses: 1 21017.5
- C-MEP-E-126: Expenses: 1 55235.7
- C-MEP-E-136: Expenses: 1 57962.7; 2 132566
- C-MEP-E-146: Expenses: 1 78921.1
- C-MEP-E-166: Expenses: 1 71857.7
- C-MEP-AC-168: Expenses: 1 140612
- C-MEP-AC-188: Expenses: 1 30741.9
- C-MEP-AC-208: Expenses: 1 8821.1
- C-MEP-AC-198: Expenses: 1 2889.38
- C-MEP-AC-178: Expenses: 1 28274.5
- C-MEP-AC-228: Expenses: 1 39827.7
- C-MEP-AC-238: Expenses: 1 55880.9
- C-MEP-FF-84: Expenses: 1 45406.9
- C-MEP-FF-104: Expenses: 1 5280.67
- C-MEP-FF-94: Expenses: 1 18427.3
- C-MEP-FF-114: Expenses: 1 64097.4

| ID | WBS | Activity | Duration | Start | Finish | Predecessors | Total float | Free float | Cost | AREA |
| --- | --- | --- | --- | --- | --- | --- | --- | --- | --- | --- |
|  | 4 | **Plumbing & Drainage** |  | 2015-04-20 | 2016-03-26 |  |  |  |  |  |
| C-MEP-PD-105 |  | Installation of Water Pipes & Valves (Hot & Cold atc..) at Mezz level 1 | 20d | 2015-04-20 | 2015-05-12 | C-MEP-FF-84 SS, C-F-P-73 | 121d | 3d | 83,874.06 | GEN |
| C-MEP-PD-125 |  | Pressure testing & Insullation of water pipes at Mezz level 1 | 8d | 2015-05-17 | 2015-05-25 | C-MEP-PD-105, C-MEP-PD-75 | 165d | 0d | 9,573.63 | GEN |
| C-MEP-PD-115 |  | Installation drainage Pipes at Mezz level 1 | 25d | 2015-05-24 | 2015-06-21 | C-MEP-PD-105 SS, C-MEP-PD-65 SS | 102d | 0d | 30,204.4 | GEN |
| C-MEP-PD-135 |  | Pressure testing of drainage pipes at Mezz level 1 | 8d | 2015-07-01 | 2015-07-09 | C-MEP-PD-115, C-MEP-PD-85 | 145d | 9d | 1,651.42 | GEN |
| C-MEP-PD-145 |  | Installation of Outlets, Drains, Gullies, Cowls, & Clean out at Mezz level 1 | 20d | 2016-03-03 | 2016-03-26 | C-MEP-PD-125, C-MEP-PD-125 FF, C-F-FF-94, C-F-WF-94, C-F-FF-94 FF, C-F-WF-114, C-F-WF-94 FF, C-F-DW-94, C-F-P-LSF-12 FF | 185d | 41d | 13,120.28 | GEN |
|  | 7 | **ELV systems** |  | 2015-05-09 | 2016-01-04 |  |  |  |  |  |
|  | 1 | **Room Management System** |  | 2015-05-14 | 2015-12-08 |  |  |  |  |  |
| C-ELV-RMS-145 |  | Installation of Cable Trays & Truncking at Mezz level 1 | 25d | 2015-05-14 | 2015-06-11 | C-ELV-CS-145 SS+5d, C-ELV-RMS-95 SS | 110d | 0d | 2,769.38 |  |
| C-ELV-RMS-105 |  | Installation of RMS first fix (Conduits, Boxes within block work , Gypsum Boards & Raised FLooring at Mezz level 1 | 20d | 2015-06-04 | 2015-06-27 | C-F-P-73, C-F-P-63, C-ELV-RMS-55 | 110d | 0d | 11,902.78 | GEN |
| C-ELV-RMS-115 |  | Installation of second fix (Cabling & Wirring etc..) at Mezz level 1 | 25d | 2015-06-28 | 2015-07-28 | C-ELV-RMS-105, C-ELV-RMS-145 | 136d | 0d | 11,902.78 | GEN |
| C-ELV-RMS-125 |  | Installation & Connection of ethernets & HVAC thermostates etc.. at Mezz level 1 | 25d | 2015-07-29 | 2015-08-26 | C-ELV-RMS-115 | 136d | 59d | 27,773.16 | GEN |
| C-ELV-RMS-135 |  | Installtion & Connection of Panels, Controller, switches, server etc..) at Mezz level 1 | 20d | 2015-11-16 | 2015-12-08 | C-ELV-RMS-125, C-ELV-RMS-85 | 175d | 0d | 27,773.16 |  |
|  | 12 | **Fire Alarm & Detection System** |  | 2015-05-26 | 2015-12-07 |  |  |  |  |  |
| C-ELV-FA-145 |  | Installation of Cable Trays & Truncking at Mezz level 1 | 25d | 2015-05-26 | 2015-06-23 | C-ELV-MSPA-145 SS+5d | 143d | 0d | 2,769.38 |  |
| C-ELV-FA-105 |  | Installation of FA first Fix Conduits, Boxes within block work , Gypsum Boards & Raised FLooring at Mezz level 1 | 20d | 2015-06-04 | 2015-06-27 | C-F-P-73, C-F-P-63, C-ELV-FA-55 | 115d | 0d | 13,660.92 | GEN |
| C-ELV-FA-115 |  | Installation of second fix (Cabling & Wirring etc..) at Mezz level 1 | 20d | 2015-06-28 | 2015-07-22 | C-ELV-FA-105, C-ELV-FA-145 | 141d | 0d | 22,768.2 | GEN |
| C-ELV-FA-125 |  | Installation & Connection of heat detector, smoke detector, flame detector etc.. at Mezz level 1 | 25d | 2015-07-23 | 2015-08-20 | C-ELV-FA-115 | 141d | 64d | 27,321.84 | GEN |
| C-ELV-FA-135 |  | Installtion & Connection of Racks & Panels at Mezz level 1 | 20d | 2015-11-15 | 2015-12-07 | C-ELV-FA-125, C-ELV-FA-85 | 156d | 0d | 27,321.84 |  |
|  | 2 | **Music System & Public Address System** |  | 2015-05-20 | 2015-10-15 |  |  |  |  |  |
| C-ELV-MSPA-145 |  | Installation of Cable Trays & Truncking at Mezz level 1 | 25d | 2015-05-20 | 2015-06-17 | C-ELV-RMS-145 SS+5d | 143d | 0d | 2,769.38 |  |
| C-ELV-MSPA-105 |  | Installation of MS/PA first fix (Conduits, Boxes within block work, Gypsum Boards & Raised FLooring at Mezz level 1 | 20d | 2015-06-04 | 2015-06-27 | C-F-P-73, C-F-P-63, C-ELV-MSPA-55 | 62d | 0d | 6,994.34 | GEN |
| C-ELV-MSPA-115 |  | Installation of second fix (Cabling & Wirring etc..) at Mezz level 1 | 25d | 2015-06-28 | 2015-07-28 | C-ELV-MSPA-105, C-ELV-MSPA-145 | 136d | 0d | 6,994.34 | GEN |
| C-ELV-MSPA-125 |  | Installation & Connection of speakers, Amplifier & Controller at Mezz level 1 | 25d | 2015-07-29 | 2015-08-26 | C-ELV-MSPA-115 | 136d | 20d | 16,320.12 | GEN |
| C-ELV-MSPA-135 |  | Installtion & Connection of Media hub, panels and processor at Mezz level 1 | 20d | 2015-09-23 | 2015-10-15 | C-ELV-MSPA-125, C-ELV-MSPA-85 | 201d | 0d | 16,320.12 |  |

Notes:
- C-MEP-PD-105: Expenses: 1 83874.1
- C-MEP-PD-125: Expenses: 1 9573.63
- C-MEP-PD-115: Expenses: 1 30204.4
- C-MEP-PD-135: Expenses: 1 1651.42
- C-MEP-PD-145: Expenses: 1 13120.3
- C-ELV-RMS-145: Expenses: 1 2769.38
- C-ELV-RMS-105: Expenses: 1 11902.8
- C-ELV-RMS-115: Expenses: 1 11902.8
- C-ELV-RMS-125: Expenses: 1 27773.2
- C-ELV-RMS-135: Expenses: 1 27773.2
- C-ELV-FA-145: Expenses: 1 2769.38
- C-ELV-FA-105: Expenses: 1 13660.9
- C-ELV-FA-115: Expenses: 1 22768.2
- C-ELV-FA-125: Expenses: 1 27321.8
- C-ELV-FA-135: Expenses: 1 27321.8
- C-ELV-MSPA-145: Expenses: 1 2769.38
- C-ELV-MSPA-105: Expenses: 1 6994.34
- C-ELV-MSPA-115: Expenses: 1 6994.34
- C-ELV-MSPA-125: Expenses: 1 16320.1
- C-ELV-MSPA-135: Expenses: 1 16320.1

| ID | WBS | Activity | Duration | Start | Finish | Predecessors | Total float | Free float | Cost | AREA |
| --- | --- | --- | --- | --- | --- | --- | --- | --- | --- | --- |
|  | 3 | **IP CCTV & Access Control System** |  | 2015-06-01 | 2015-12-10 |  |  |  |  |  |
| C-ELV-CCTV-145 |  | Installation of Cable Trays & Truncking at Mezz level 1 | 25d | 2015-06-01 | 2015-06-29 | C-ELV-FA-145 SS+5d | 143d | 0d | 2,769.38 |  |
| C-ELV-CCTV-105 |  | Installation of CCTV first Fix Conduits, Boxes within block work, Gypsum Boards & Raised FLooring at Mezz level 1 | 20d | 2015-06-04 | 2015-06-27 | C-F-P-73, C-F-P-63, C-ELV-CCTV-55 | 122d | 0d | 8,161.35 | GEN |
| C-ELV-CCTV-115 |  | Installation of second fix (Cabling & Wirring etc..) at Mezz level 1 | 20d | 2015-06-30 | 2015-07-25 | C-ELV-CCTV-105, C-ELV-CCTV-145 | 146d | 0d | 19,043.14 | GEN |
| C-ELV-CCTV-125 |  | Installation & Connection of Camera's & Alarms at Mezz level 1 | 18d | 2015-07-26 | 2015-08-15 | C-ELV-CCTV-115 | 146d | 69d | 183,698.91 | GEN |
| C-ELV-CCTV-135 |  | Installtion & Connection of Racks, Panels etc... at Mezz level 1 | 25d | 2015-11-12 | 2015-12-10 | C-ELV-CCTV-125 FF, C-ELV-CCTV-85 | 123d | 0d | 7,322.52 |  |
|  | 7 | **Communication System** |  | 2015-05-09 | 2016-01-04 |  |  |  |  |  |
| C-ELV-CS-145 |  | Installation of Cable Trays & Truncking at Mezz level 1 | 18d | 2015-05-09 | 2015-05-28 | C-MEP-E-176 SS | 110d | 0d | 2,769.38 |  |
| C-ELV-CS-105 |  | Installation of CS first fix (Conduits, Boxes within block work, Gypsum Boards & Raised FLooring at Mezz level 1 | 20d | 2015-06-04 | 2015-06-27 | C-F-P-73, C-F-P-63, C-ELV-CS-55, C-ELV-CS-95 | 119d | 0d | 27,356.12 | GEN |
| C-ELV-CS-115 |  | Installation of second fix (Cabling & Wirring etc..) at Mezz level 1 | 25d | 2015-07-13 | 2015-08-12 | C-ELV-CS-105, C-ELV-CS-145, C-ELV-CS-65 SS | 106d | 0d | 82,068.35 | GEN |
| C-ELV-CS-125 |  | Installation & Connection of Wireless Access points & IP dect phone & RJ 45 at Mezz level 1 | 25d | 2015-08-13 | 2015-09-10 | C-ELV-CS-115, C-ELV-CS-75 SS | 106d | 0d | 93,342.54 | GEN |
| C-ELV-CS-135 |  | Installtion & Connection of Controller & Instrumentation at Mezz level 1 | 20d | 2015-12-12 | 2016-01-04 | C-ELV-CS-125, C-ELV-CS-85 | 125d | 0d | 223,314.69 |  |
|  | 4 | **IP, SMATV & QAM Television System** |  | 2015-06-04 | 2015-12-17 |  |  |  |  |  |
| C-ELV-SMATV-105 |  | Installation of SMATV first Fix Conduits, Boxes within block work , Gypsum Boards & Raised FLooring at Mezz level 1 | 20d | 2015-06-04 | 2015-06-27 | C-F-P-73, C-F-P-63, C-ELV-SMATV-55 | 126d | 0d | 4,452.18 | GEN |
| C-ELV-SMATV-145 |  | Installation of Cable Trays & Truncking at Mezz level 1 | 25d | 2015-06-07 | 2015-07-05 | C-ELV-CCTV-145 SS+5d | 143d | 0d | 2,769.38 |  |
| C-ELV-SMATV-115 |  | Installation of second fix (Cabling & Wirring etc..) at Mezz level 1 | 16d | 2015-07-06 | 2015-07-26 | C-ELV-SMATV-105, C-ELV-SMATV-145 | 145d | 0d | 10,388.41 | GEN |
| C-ELV-SMATV-125 |  | Installation & Connection of Outlets, switches and splitter at Mezz level 1 | 18d | 2015-07-27 | 2015-08-16 | C-ELV-SMATV-115 | 145d | 68d | 6,537.45 | GEN |
| C-ELV-SMATV-135 |  | Installtion & Connection of SMATV & QAM fiber & receiver at Mezz level 1 | 20d | 2015-11-25 | 2015-12-17 | C-ELV-SMATV-125, C-ELV-SMATV-85 | 167d | 0d | 2,419.21 |  |
|  | 5 | **BMS system** |  | 2015-06-04 | 2016-01-18 |  |  |  |  |  |
| C-MEP-BMS-105 |  | Installation of BMS first Fix Conduits, Boxes within block work , Gypsum Boards & Raised FLooring at Mezz level 1 | 20d | 2015-06-04 | 2015-06-27 | C-F-P-73, C-F-P-63, C-MEP-BMS-55 | 119d | 0d | 8,895.95 | GEN |
| C-MEP-BMS-145 |  | Installation of Cable trays & Trunking at Mezz level 1 | 20d | 2015-06-13 | 2015-07-05 | C-ELV-SMATV-145 SS+5d | 143d | 0d |  |  |
| C-MEP-BMS-115 |  | Installation of BMS Cabling & Wirring at Mezz level 1 | 16d | 2015-07-06 | 2015-07-26 | C-MEP-BMS-105, C-MEP-BMS-145 | 143d | 47d | 11,861.27 | GEN |
| C-MEP-BMS-125 |  | Installation & Connection of BMS Sensors, Relays, & Valves at Mezz level 1 | 20d | 2015-09-23 | 2015-10-15 | C-MEP-BMS-115, C-MEP-PD-135, C-MEP-PD-125, C-MEP-FF-94, C-MEP-AC-228, C-MEP-AC-208, C-MEP-AC-218 | 96d | 19d | 14,826.58 | GEN |
| C-MEP-BMS-135 |  | Installtion & Connection of BMS Racks, Panels etc... at Mezz level 1 | 20d | 2015-12-27 | 2016-01-18 | C-MEP-BMS-125, C-MEP-BMS-85 | 191d | 0d | 14,826.58 |  |

Notes:
- C-ELV-CCTV-145: Expenses: 1 2769.38
- C-ELV-CCTV-105: Expenses: 1 8161.35
- C-ELV-CCTV-115: Expenses: 1 19043.1
- C-ELV-CCTV-125: Expenses: 1 183699
- C-ELV-CCTV-135: Expenses: 1 7322.52
- C-ELV-CS-145: Expenses: 1 2769.38
- C-ELV-CS-105: Expenses: 1 27356.1
- C-ELV-CS-115: Expenses: 1 82068.4
- C-ELV-CS-125: Expenses: 1 93342.5
- C-ELV-CS-135: Expenses: 1 223315
- C-ELV-SMATV-105: Expenses: 1 4452.18
- C-ELV-SMATV-145: Expenses: 1 2769.38
- C-ELV-SMATV-115: Expenses: 1 10388.4
- C-ELV-SMATV-125: Expenses: 1 6537.45
- C-ELV-SMATV-135: Expenses: 1 2419.21
- C-MEP-BMS-105: Expenses: 1 8895.95
- C-MEP-BMS-115: Expenses: 1 11861.3
- C-MEP-BMS-125: Expenses: 1 14826.6
- C-MEP-BMS-135: Expenses: 1 14826.6

| ID | WBS | Activity | Duration | Start | Finish | Predecessors | Total float | Free float | Cost | AREA |
| --- | --- | --- | --- | --- | --- | --- | --- | --- | --- | --- |
|  | 28 | **MEP - Level 2** |  | 2015-04-20 | 2016-08-01 |  |  |  |  |  |
|  | 1 | **Electrical** |  | 2015-05-30 | 2016-08-01 |  |  |  |  |  |
| C-MEP-E-296 |  | Installation of Cable Trays & Truncking at level 2 | 18d | 2015-05-30 | 2015-06-18 | C-MEP-FF-164 SS+10d, C-MEP-PD-205 SS+5d, C-MEP-E-176 | 117d | 0d | 21,017.55 |  |
| C-MEP-E-246 |  | Installation of first Electrical Fix Conduits, Boxes within block work & Gypsum Boards at level 2 | 20d | 2015-06-15 | 2015-07-07 | C-F-P-123, C-MEP-E-126 | 104d | 0d | 55,235.7 | GEN |
| C-MEP-E-256 |  | Installation of Electrical Second Fix (Cabling & Wirring etc..). at level 2 | 18d | 2015-07-08 | 2015-07-30 | C-MEP-E-246, C-MEP-E-296, C-MEP-E-136 | 108d | 0d | 190,528.33 | GEN |
| C-MEP-E-266 |  | Installation & Connection of Electrical DB's, SMDB's & MCC's at level 2 | 16d | 2015-08-01 | 2015-08-18 | C-MEP-E-256, C-MEP-E-146 SS | 110d | 0d | 148,066.94 | GEN |
| C-MEP-E-286 |  | Installation & Connection of Lighting Fixtures & Sockets at level 2 | 14d | 2016-07-17 | 2016-08-01 | C-MEP-E-256, C-F-CF-317, C-F-CF-307, C-MEP-E-266, C-F-WF-174, C-F-WF-184, C-MEP-E-166, C-F-P-LSF-22 FF | 86d | 0d | 71,857.69 | GEN |
|  | 2 | **HVAC** |  | 2015-04-20 | 2016-03-17 |  |  |  |  |  |
| C-MEP-AC-328 |  | Installation of Ductwork, Insulation & Dampers at level 2 | 23d | 2015-04-20 | 2015-05-16 | C-F-P-123 SS, SD-CS-L2-212, C-MEP-AC-168 | 114d | 0d | 140,612.08 | GEN |
| C-MEP-AC-378 |  | Pressure testing of Ductwork at level 2 | 8d | 2015-05-17 | 2015-05-25 | C-MEP-AC-328, C-MEP-AC-218 | 121d | 0d |  | GEN |
| C-MEP-AC-348 |  | Installation of Chilled Water Pipes & Valves at level 2 | 25d | 2015-05-20 | 2015-06-17 | C-MEP-AC-328 SS+10d, C-MEP-AC-188 | 120d | 0d | 30,741.92 | GEN |
| C-MEP-AC-368 |  | Pressure testing & Insulation of Chilled Water Pipes at level 2 | 12d | 2015-07-18 | 2015-07-30 | C-MEP-AC-348, C-MEP-AC-208 | 121d | 0d | 8,821.1 | GEN |
| C-MEP-AC-358 |  | Installation of Chilled Water Pipes Control Devices & Isolator at level 2 | 8d | 2015-08-01 | 2015-08-09 | C-MEP-AC-368, C-MEP-AC-198 | 121d | 0d | 2,889.38 | GEN |
| C-MEP-AC-338 |  | Installation of Silencers, Attenuators, Isolators & Detectors at level 2 | 12d | 2015-08-19 | 2015-09-01 | C-MEP-AC-378, C-MEP-AC-178 SS | 133d | 0d | 28,274.51 | GEN |
| C-MEP-AC-388 |  | Installation of HVAC equipments AHU's, FCU's, ERU's, VAV's, CAV's & Fans at level 2 | 25d | 2015-08-22 | 2015-09-19 | C-MEP-AC-378 FF, C-MEP-AC-368 FF, C-MEP-AC-328 SS, C-MEP-AC-228 SS | 104d | 0d | 406,895.8 | GEN |
| C-MEP-AC-398 |  | Installation of Grilles, Diffusers & Controller at level 2 | 12d | 2016-03-05 | 2016-03-17 | C-MEP-AC-388, C-F-CF-317, C-F-CF-307, C-F-WF-184 FF, C-F-CF-307 FF, C-F-WF-174 FF | 206d | 61d | 55,880.87 | GEN |
|  | 3 | **Fire Fighting** |  | 2015-05-02 | 2016-02-04 |  |  |  |  |  |
| C-MEP-FF-164 |  | Installation of FIre fighting Pipes at level 2 | 25d | 2015-05-02 | 2015-05-30 | C-MEP-AC-328 SS+10d, SD-CS-L2-232 | 124d | 0d | 45,406.88 | GEN |
| C-MEP-FF-184 |  | Pressure testing of fire fighting pipes at level 2 | 8d | 2015-06-01 | 2015-06-09 | C-MEP-FF-164, C-MEP-FF-104 | 123d | 0d | 5,280.67 | GEN |
| C-MEP-FF-174 |  | Installation of fire Fighting Valves at level 2 | 20d | 2015-07-11 | 2015-08-04 | C-MEP-FF-184, C-MEP-FF-94 | 97d | 0d | 18,427.34 | GEN |
| C-MEP-FF-194 |  | Installation of Fire Fighting Sprinklers & Fire hose Cabinets & Extinguishers at level 2 | 14d | 2016-01-20 | 2016-02-04 | C-MEP-FF-174, C-F-CF-307, C-F-CF-297, C-MEP-FF-184, C-MEP-FF-114 | 116d | 0d | 64,097.37 | GEN |
|  | 4 | **Plumbing & Drainage** |  | 2015-05-02 | 2016-03-12 |  |  |  |  |  |
| C-MEP-PD-205 |  | Installation of Water Pipes & Valves (Hot & Cold atc..) at level 2 | 20d | 2015-05-02 | 2015-05-24 | C-MEP-FF-164 SS, C-F-P-133, SD-CS-L2-272 | 136d | 1d | 83,874.06 | GEN |
| C-MEP-PD-225 |  | Pressure testing & Insullation of water pipes at level 2 | 8d | 2015-05-26 | 2015-06-03 | C-MEP-PD-205, C-MEP-PD-125 | 165d | 0d | 9,573.63 | GEN |
| C-MEP-PD-215 |  | Installation drainage Pipes at level 2 | 25d | 2015-06-22 | 2015-07-22 | C-MEP-PD-205 SS, C-MEP-PD-115 | 102d | 0d | 30,204.4 | GEN |
| C-MEP-PD-235 |  | Pressure testing of drainage pipes at level 2 | 8d | 2015-07-23 | 2015-08-01 | C-MEP-PD-215, C-MEP-PD-135 | 136d | 17d | 1,651.42 | GEN |
| C-MEP-PD-245 |  | Installation of Outlets, Drains, Gullies, Cowls, & Clean out at level 2 | 20d | 2016-02-18 | 2016-03-12 | C-MEP-PD-225, C-MEP-PD-225 FF, C-F-FF-174, C-F-WF-174, C-F-FF-174 FF, C-F-WF-194, C-F-WF-174 FF, C-F-DW-174, C-F-P-LSF-22 FF | 207d | 53d | 13,120.28 | GEN |

Notes:
- C-MEP-E-296: Expenses: 1 21017.5
- C-MEP-E-246: Expenses: 1 55235.7
- C-MEP-E-256: Expenses: 1 57962.7; 2 132566
- C-MEP-E-266: Expenses: 1 78921.1; 2 69145.8
- C-MEP-E-286: Expenses: 1 71857.7
- C-MEP-AC-328: Expenses: 1 140612
- C-MEP-AC-348: Expenses: 1 30741.9
- C-MEP-AC-368: Expenses: 1 8821.1
- C-MEP-AC-358: Expenses: 1 2889.38
- C-MEP-AC-338: Expenses: 1 28274.5
- C-MEP-AC-388: Expenses: 1 406896
- C-MEP-AC-398: Expenses: 1 55880.9
- C-MEP-FF-164: Expenses: 1 45406.9
- C-MEP-FF-184: Expenses: 1 5280.67
- C-MEP-FF-174: Expenses: 1 18427.3
- C-MEP-FF-194: Expenses: 1 64097.4
- C-MEP-PD-205: Expenses: 1 83874.1
- C-MEP-PD-225: Expenses: 1 9573.63
- C-MEP-PD-215: Expenses: 1 30204.4
- C-MEP-PD-235: Expenses: 1 1651.42
- C-MEP-PD-245: Expenses: 1 13120.3

| ID | WBS | Activity | Duration | Start | Finish | Predecessors | Total float | Free float | Cost | AREA |
| --- | --- | --- | --- | --- | --- | --- | --- | --- | --- | --- |
|  | 7 | **ELV systems** |  | 2015-05-30 | 2016-01-10 |  |  |  |  |  |
|  | 1 | **Room Management System** |  | 2015-06-13 | 2016-01-02 |  |  |  |  |  |
| C-ELV-RMS-245 |  | Installation of Cable Trays & Truncking at level 2 | 25d | 2015-06-13 | 2015-07-11 | C-ELV-CS-245 SS+5d, C-ELV-RMS-145 | 110d | 0d | 2,769.38 |  |
| C-ELV-RMS-205 |  | Installation of RMS first fix (Conduits, Boxes within block work , Gypsum Boards & Raised FLooring at level 2 | 20d | 2015-06-28 | 2015-07-22 | C-F-P-133, C-F-P-123, SD-CS-L2-452, C-ELV-RMS-105 | 110d | 0d | 11,902.78 | GEN |
| C-ELV-RMS-215 |  | Installation of second fix (Cabling & Wirring etc..) at level 2 | 25d | 2015-07-23 | 2015-08-20 | C-ELV-RMS-205, C-ELV-RMS-245 | 124d | 0d | 11,902.78 | GEN |
| C-ELV-RMS-225 |  | Installation & Connection of ethernets & HVAC thermostates etc.. at level 2 | 25d | 2015-08-22 | 2015-09-19 | C-ELV-RMS-215 | 124d | 20d | 27,773.16 | GEN |
| C-ELV-RMS-235 |  | Installtion & Connection of Panels, Controller, switches, server etc..) at level 2 | 20d | 2015-12-09 | 2016-01-02 | C-ELV-RMS-225, C-ELV-RMS-135 | 175d | 0d | 27,773.16 |  |
|  | 12 | **Fire Alarm & Detection System** |  | 2015-06-24 | 2015-12-31 |  |  |  |  |  |
| C-ELV-FA-245 |  | Installation of Cable Trays & Truncking at level 2 | 25d | 2015-06-24 | 2015-07-25 | C-ELV-MSPA-245 SS+5d, SD-CS-L2-492 | 126d | 0d | 2,769.38 |  |
| C-ELV-FA-205 |  | Installation of FA first Fix Conduits, Boxes within block work , Gypsum Boards & Raised FLooring at level 2 | 20d | 2015-06-28 | 2015-07-22 | C-F-P-133, C-F-P-123, C-ELV-FA-105 | 115d | 0d | 13,660.92 | GEN |
| C-ELV-FA-215 |  | Installation of second fix (Cabling & Wirring etc..) at level 2 | 20d | 2015-07-26 | 2015-08-17 | C-ELV-FA-205, C-ELV-FA-245 | 127d | 0d | 22,768.2 | GEN |
| C-ELV-FA-225 |  | Installation & Connection of heat detector, smoke detector, flame detector etc.. at level 2 | 25d | 2015-08-18 | 2015-09-15 | C-ELV-FA-215 | 127d | 23d | 27,321.84 | GEN |
| C-ELV-FA-235 |  | Installtion & Connection of Racks & Panels at level 2 | 20d | 2015-12-08 | 2015-12-31 | C-ELV-FA-225, C-ELV-FA-135 | 156d | 0d | 27,321.84 |  |
|  | 2 | **Music System & Public Address System** |  | 2015-06-18 | 2015-11-08 |  |  |  |  |  |
| C-ELV-MSPA-245 |  | Installation of Cable Trays & Truncking at level 2 | 25d | 2015-06-18 | 2015-07-19 | C-ELV-RMS-245 SS+5d | 126d | 0d | 2,769.38 |  |
| C-ELV-MSPA-205 |  | Installation of MS/PA first fix (Conduits, Boxes within block work, Gypsum Boards & Raised FLooring at level 2 | 20d | 2015-06-28 | 2015-07-22 | C-F-P-133, C-F-P-123, SD-CS-L2-472, C-ELV-MSPA-105 | 62d | 0d | 6,994.34 | GEN |
| C-ELV-MSPA-215 |  | Installation of second fix (Cabling & Wirring etc..) at level 2 | 25d | 2015-07-23 | 2015-08-20 | C-ELV-MSPA-205, C-ELV-MSPA-245 | 124d | 0d | 6,994.34 | GEN |
| C-ELV-MSPA-225 |  | Installation & Connection of speakers, Amplifier & Controller at level 2 | 25d | 2015-08-22 | 2015-09-19 | C-ELV-MSPA-215 | 124d | 14d | 16,320.12 | GEN |
| C-ELV-MSPA-235 |  | Installtion & Connection of Media hub, panels and processor at level 2 | 20d | 2015-10-17 | 2015-11-08 | C-ELV-MSPA-225, C-ELV-MSPA-135 | 201d | 0d | 16,320.12 |  |
|  | 3 | **IP CCTV & Access Control System** |  | 2015-06-28 | 2016-01-10 |  |  |  |  |  |
| C-ELV-CCTV-205 |  | Installation of CCTV first Fix Conduits, Boxes within block work, Gypsum Boards & Raised FLooring at level 2 | 20d | 2015-06-28 | 2015-07-22 | C-F-P-133, C-F-P-123, SD-CS-L2-512, C-ELV-CCTV-105 | 122d | 0d | 8,161.35 | GEN |
| C-ELV-CCTV-245 |  | Installation of Cable Trays & Truncking at level 2 | 25d | 2015-06-30 | 2015-07-30 | C-ELV-FA-245 SS+5d | 126d | 0d | 2,769.38 |  |
| C-ELV-CCTV-215 |  | Installation of second fix (Cabling & Wirring etc..) at level 2 | 20d | 2015-08-01 | 2015-08-23 | C-ELV-CCTV-205, C-ELV-CCTV-245 | 129d | 0d | 19,043.14 | GEN |
| C-ELV-CCTV-225 |  | Installation & Connection of Camera's & Alarms at level 2 | 18d | 2015-08-24 | 2015-09-13 | C-ELV-CCTV-215 | 129d | 25d | 183,698.91 | GEN |
| C-ELV-CCTV-235 |  | Installtion & Connection of Racks, Panels etc... at level 2 | 25d | 2015-12-12 | 2016-01-10 | C-ELV-CCTV-225 FF, C-ELV-CCTV-135 | 123d | 0d | 7,322.52 |  |

Notes:
- C-ELV-RMS-245: Expenses: 1 2769.38
- C-ELV-RMS-205: Expenses: 1 11902.8
- C-ELV-RMS-215: Expenses: 1 11902.8
- C-ELV-RMS-225: Expenses: 1 27773.2
- C-ELV-RMS-235: Expenses: 1 27773.2
- C-ELV-FA-245: Expenses: 1 2769.38
- C-ELV-FA-205: Expenses: 1 13660.9
- C-ELV-FA-215: Expenses: 1 22768.2
- C-ELV-FA-225: Expenses: 1 27321.8
- C-ELV-FA-235: Expenses: 1 27321.8
- C-ELV-MSPA-245: Expenses: 1 2769.38
- C-ELV-MSPA-205: Expenses: 1 6994.34
- C-ELV-MSPA-215: Expenses: 1 6994.34
- C-ELV-MSPA-225: Expenses: 1 16320.1
- C-ELV-MSPA-235: Expenses: 1 16320.1
- C-ELV-CCTV-205: Expenses: 1 8161.35
- C-ELV-CCTV-245: Expenses: 1 2769.38
- C-ELV-CCTV-215: Expenses: 1 19043.1
- C-ELV-CCTV-225: Expenses: 1 183699
- C-ELV-CCTV-235: Expenses: 1 7322.52

| ID | WBS | Activity | Duration | Start | Finish | Predecessors | Total float | Free float | Cost | AREA |
| --- | --- | --- | --- | --- | --- | --- | --- | --- | --- | --- |
|  | 7 | **Communication System** |  | 2015-05-30 | 2016-01-04 |  |  |  |  |  |
| C-ELV-CS-245 |  | Installation of Cable Trays & Truncking at level 2 | 18d | 2015-05-30 | 2015-06-18 | C-MEP-E-296 SS, C-ELV-RMS-145 SS | 117d | 0d | 2,769.38 |  |
| C-ELV-CS-205 |  | Installation of CS first fix (Conduits, Boxes within block work, Gypsum Boards & Raised FLooring at level 2 | 20d | 2015-06-28 | 2015-07-22 | C-F-P-133, C-F-P-123, SD-CS-L2-432, C-ELV-CS-105 | 124d | 0d | 27,356.12 | GEN |
| C-ELV-CS-215 |  | Installation of second fix (Cabling & Wirring etc..) at level 2 | 25d | 2015-08-13 | 2015-09-10 | C-ELV-CS-205, C-ELV-CS-245, C-ELV-CS-115 | 106d | 0d | 82,068.35 | GEN |
| C-ELV-CS-225 |  | Installation & Connection of Wireless Access points & IP dect phone & RJ 45 at level 2 | 25d | 2015-09-12 | 2015-10-13 | C-ELV-CS-215, C-ELV-CS-125 | 106d | 2d | 93,342.54 | GEN |
| C-ELV-CS-235 |  | Installtion & Connection of Controller & Instrumentation at level 2 | 20d | 2015-12-12 | 2016-01-04 | C-ELV-CS-225, C-ELV-CS-135 SS | 125d | 0d | 223,314.69 |  |
|  | 4 | **IP, SMATV & QAM Television System** |  | 2015-06-28 | 2015-12-17 |  |  |  |  |  |
| C-ELV-SMATV-205 |  | Installation of SMATV first Fix Conduits, Boxes within block work , Gypsum Boards & Raised FLooring at level 2 | 20d | 2015-06-28 | 2015-07-22 | C-F-P-133, C-F-P-123, SD-CS-L2-532, C-ELV-SMATV-105 | 126d | 0d | 4,452.18 | GEN |
| C-ELV-SMATV-245 |  | Installation of Cable Trays & Truncking at level 2 | 25d | 2015-07-06 | 2015-08-05 | C-ELV-CCTV-245 SS+5d | 126d | 0d | 2,769.38 |  |
| C-ELV-SMATV-215 |  | Installation of second fix (Cabling & Wirring etc..) at level 2 | 16d | 2015-08-06 | 2015-08-24 | C-ELV-SMATV-205, C-ELV-SMATV-245 | 128d | 0d | 10,388.41 | GEN |
| C-ELV-SMATV-225 |  | Installation & Connection of Outlets, switches and splitter at level 2 | 18d | 2015-08-25 | 2015-09-14 | C-ELV-SMATV-215 | 128d | 24d | 6,537.45 | GEN |
| C-ELV-SMATV-235 |  | Installtion & Connection of SMATV & QAM fiber & receiver at level 2 | 20d | 2015-11-25 | 2015-12-17 | C-ELV-SMATV-225, C-ELV-SMATV-135 SS | 167d | 0d | 2,419.21 |  |
|  | 5 | **BMS system** |  | 2015-06-28 | 2016-01-18 |  |  |  |  |  |
| C-MEP-BMS-205 |  | Installation of BMS first Fix Conduits, Boxes within block work , Gypsum Boards & Raised FLooring at level 2 | 20d | 2015-06-28 | 2015-07-22 | C-F-P-133, C-F-P-123, SD-CS-L2-412, C-ELV-CS-145, C-MEP-BMS-105 | 119d | 0d | 8,895.95 | GEN |
| C-MEP-BMS-245 |  | Installation of Cable trays & Trunking at level 2 | 20d | 2015-07-12 | 2015-08-05 | C-ELV-SMATV-245 SS+5d | 126d | 0d |  |  |
| C-MEP-BMS-215 |  | Installation of BMS Cabling & Wirring at level 2 | 16d | 2015-08-06 | 2015-08-24 | C-MEP-BMS-205, C-MEP-BMS-245 | 126d | 22d | 11,861.27 | GEN |
| C-MEP-BMS-225 |  | Installation & Connection of BMS Sensors, Relays, & Valves at level 2 | 20d | 2015-09-23 | 2015-10-15 | C-MEP-BMS-215, C-MEP-PD-235, C-MEP-PD-225, C-MEP-FF-174, C-MEP-AC-388, C-MEP-AC-368, C-MEP-AC-378 | 104d | 0d | 14,826.58 | GEN |
| C-MEP-BMS-235 |  | Installtion & Connection of BMS Racks, Panels etc... at level 2 | 20d | 2015-12-27 | 2016-01-18 | C-MEP-BMS-225, C-MEP-BMS-135 SS | 191d | 0d | 14,826.58 |  |
|  | 27 | **MEP - Level 3** |  | 2015-04-15 | 2016-10-11 |  |  |  |  |  |
|  | 1 | **Electrical** |  | 2015-05-30 | 2016-08-17 |  |  |  |  |  |
| C-MEP-E-002 |  | Installation of Cable Trays & Truncking at level 3 | 18d | 2015-05-30 | 2015-06-18 | C-MEP-FF-001 SS+10d, C-MEP-PD-001 SS+5d, C-MEP-E-296 SS | 121d | 0d | 21,017.55 |  |
| C-MEP-E-001 |  | Installation of first Electrical Fix Conduits, Boxes within block work & Gypsum Boards at level 3 | 20d | 2015-06-15 | 2015-07-07 | C-F-P-001, C-MEP-E-246 SS | 104d | 0d | 55,235.7 | GEN |
| C-MEP-E-003 |  | Installation of Electrical Second Fix (Cabling & Wirring etc..). at level 3 | 18d | 2015-07-08 | 2015-07-30 | C-MEP-E-001, C-MEP-E-002, C-MEP-E-256 SS | 108d | 0d | 190,528.33 | GEN |
| C-MEP-E-004 |  | Installation & Connection of Electrical DB's, SMDB's & MCC's at level 3 | 16d | 2015-08-01 | 2015-08-18 | C-MEP-E-003, C-MEP-E-266 SS | 110d | 0d | 148,068.29 | GEN |
| C-MEP-E-005 |  | Installation & Connection of Lighting Fixtures & Sockets at level 3 | 14d | 2016-08-02 | 2016-08-17 | C-MEP-E-003, C-F-CF-007, C-F-CF-005, C-F-WF-003, C-F-WF-004, C-MEP-E-286, C-F-P-LSF-32 FF | 86d | 0d | 71,857.69 | GEN |

Notes:
- C-ELV-CS-245: Expenses: 1 2769.38
- C-ELV-CS-205: Expenses: 1 27356.1
- C-ELV-CS-215: Expenses: 1 82068.4
- C-ELV-CS-225: Expenses: 1 93342.5
- C-ELV-CS-235: Expenses: 1 223315
- C-ELV-SMATV-205: Expenses: 1 4452.18
- C-ELV-SMATV-245: Expenses: 1 2769.38
- C-ELV-SMATV-215: Expenses: 1 10388.4
- C-ELV-SMATV-225: Expenses: 1 6537.45
- C-ELV-SMATV-235: Expenses: 1 2419.21
- C-MEP-BMS-205: Expenses: 1 8895.95
- C-MEP-BMS-215: Expenses: 1 11861.3
- C-MEP-BMS-225: Expenses: 1 14826.6
- C-MEP-BMS-235: Expenses: 1 14826.6
- C-MEP-E-002: Expenses: 1 21017.5
- C-MEP-E-001: Expenses: 1 55235.7
- C-MEP-E-003: Expenses: 1 57962.7; 2 132566
- C-MEP-E-004: Expenses: 1 78921.1; 2 69147.1
- C-MEP-E-005: Expenses: 1 71857.7

| ID | WBS | Activity | Duration | Start | Finish | Predecessors | Total float | Free float | Cost | AREA |
| --- | --- | --- | --- | --- | --- | --- | --- | --- | --- | --- |
|  | 2 | **HVAC** |  | 2015-04-20 | 2016-04-11 |  |  |  |  |  |
| C-MEP-AC-001 |  | Installation of Ductwork, Insulation & Dampers at level 3 | 23d | 2015-04-20 | 2015-05-16 | C-F-P-001 SS, SD-CS-L3-232, C-MEP-AC-328 SS | 114d | 0d | 140,612.08 | GEN |
| C-MEP-AC-002 |  | Installation of Chilled Water Pipes & Valves at level 3 | 25d | 2015-05-20 | 2015-06-17 | C-MEP-AC-001 SS+10d, C-MEP-AC-348 SS | 120d | 0d | 30,741.92 | GEN |
| C-MEP-AC-004 |  | Pressure testing of Ductwork at level 3 | 8d | 2015-05-26 | 2015-06-03 | C-MEP-AC-001, C-MEP-AC-378 | 121d | 7d |  | GEN |
| C-MEP-AC-006 |  | Pressure testing & Insulation of Chilled Water Pipes at level 3 | 12d | 2015-07-18 | 2015-07-30 | C-MEP-AC-002, C-MEP-AC-208 | 121d | 0d | 8,821.1 | GEN |
| C-MEP-AC-007 |  | Installation of Chilled Water Pipes Control Devices & Isolator at level 3 | 8d | 2015-08-10 | 2015-08-18 | C-MEP-AC-006, C-MEP-AC-358 | 121d | 0d | 2,889.38 | GEN |
| C-MEP-AC-005 |  | Installation of Silencers, Attenuators, Isolators & Detectors at level 3 | 12d | 2015-08-19 | 2015-09-01 | C-MEP-AC-004, C-MEP-AC-338 SS | 133d | 0d | 28,274.51 | GEN |
| C-MEP-AC-003 |  | Installation of HVAC equipments AHU's, FCU's, ERU's, VAV's, CAV's & Fans at level 3 | 25d | 2015-08-22 | 2015-09-19 | C-MEP-AC-004 FF, C-MEP-AC-006 FF, C-MEP-AC-001 SS, C-MEP-AC-388 SS | 110d | 0d | 186,246.66 | GEN |
| C-MEP-AC-008 |  | Installation of Grilles, Diffusers & Controller at level 3 | 12d | 2016-03-29 | 2016-04-11 | C-MEP-AC-003, C-F-CF-007, C-F-CF-005, C-F-WF-004 FF, C-F-CF-005 FF, C-F-WF-003 FF | 185d | 40d | 55,880.87 | GEN |
|  | 3 | **Fire Fighting** |  | 2015-05-02 | 2016-02-22 |  |  |  |  |  |
| C-MEP-FF-001 |  | Installation of FIre fighting Pipes at level 3 | 25d | 2015-05-02 | 2015-05-30 | C-MEP-AC-001 SS+10d, SD-CS-L3-252 | 135d | 4d | 45,406.88 | GEN |
| C-MEP-FF-002 |  | Pressure testing of fire fighting pipes at level 3 | 8d | 2015-06-10 | 2015-06-18 | C-MEP-FF-001, C-MEP-FF-184 | 135d | 6d | 5,280.67 | GEN |
| C-MEP-FF-003 |  | Installation of fire Fighting Valves at level 3 | 20d | 2015-08-05 | 2015-08-27 | C-MEP-FF-002, C-MEP-FF-174 | 97d | 0d | 18,427.34 | GEN |
| C-MEP-FF-004 |  | Installation of Fire Fighting Sprinklers & Fire hose Cabinets & Extinguishers at level 3 | 14d | 2016-02-06 | 2016-02-22 | C-MEP-FF-003, C-F-CF-005, C-F-CF-004, C-MEP-FF-002, C-MEP-FF-194 | 116d | 0d | 64,097.37 | GEN |
|  | 4 | **Plumbing & Drainage** |  | 2015-04-15 | 2016-04-05 |  |  |  |  |  |
| C-MEP-PD-2935 |  | Installation of swimming pool GRP Water Tanks at level 3 | 25d | 2015-04-15 | 2015-05-13 | P-MEP-P-2403, C-CS-L3-61 | 376d | 47d | 136,682.58 |  |
| C-MEP-PD-001 |  | Installation of Water Pipes & Valves (Hot & Cold atc..) at level 3 | 20d | 2015-05-06 | 2015-05-28 | C-MEP-FF-001 SS, C-F-P-002, SD-CS-L3-292 | 136d | 5d | 83,874.06 | GEN |
| C-MEP-PD-003 |  | Pressure testing & Insullation of water pipes at level 3 | 8d | 2015-06-04 | 2015-06-13 | C-MEP-PD-001, C-MEP-PD-225 | 165d | 6d | 9,573.63 | GEN |
| C-MEP-PD-2945 |  | Installation & connection of swimming pool dosing pump at level 3 | 25d | 2015-07-08 | 2015-08-08 | C-MEP-PD-2935, P-MEP-P-2683 | 329d | 210d | 87,476.85 |  |
| C-MEP-PD-002 |  | Installation drainage Pipes at level 3 | 25d | 2015-07-23 | 2015-08-20 | C-MEP-PD-001 SS, C-MEP-PD-215 | 102d | 0d | 30,204.4 | GEN |
| C-MEP-PD-004 |  | Pressure testing of drainage pipes at level 3 | 8d | 2015-08-22 | 2015-08-30 | C-MEP-PD-002, C-MEP-PD-235 | 119d | 17d | 1,651.42 | GEN |
| C-MEP-PD-005 |  | Installation of Outlets, Drains, Gullies, Cowls, & Clean out at level 3 | 20d | 2016-03-14 | 2016-04-05 | C-MEP-PD-003, C-MEP-PD-003 FF, C-F-FF-003, C-F-WF-003, C-F-FF-003 FF, C-F-WF-002, C-F-WF-003 FF, C-F-DW-004, C-F-P-LSF-32 FF | 196d | 32d | 13,120.28 | GEN |
|  | 7 | **ELV systems** |  | 2015-05-30 | 2016-02-08 |  |  |  |  |  |
|  | 1 | **Room Management System** |  | 2015-07-12 | 2016-01-25 |  |  |  |  |  |
| C-ELV-RMS-002 |  | Installation of Cable Trays & Truncking at level 3 | 18d | 2015-07-12 | 2015-08-03 | C-ELV-CS-002 SS+5d, C-ELV-RMS-245 | 110d | 0d | 2,769.38 |  |
| C-ELV-RMS-001 |  | Installation of RMS first fix (Conduits, Boxes within block work , Gypsum Boards & Raised FLooring at level 3 | 20d | 2015-07-23 | 2015-08-15 | C-F-P-002, C-F-P-001, SD-CS-L3-472, C-ELV-RMS-205 | 110d | 0d | 11,902.78 | GEN |
| C-ELV-RMS-003 |  | Installation of second fix (Cabling & Wirring etc..) at level 3 | 25d | 2015-08-16 | 2015-09-13 | C-ELV-RMS-001, C-ELV-RMS-002 | 113d | 0d | 11,902.78 | GEN |
| C-ELV-RMS-004 |  | Installation & Connection of ethernets & HVAC thermostates etc.. at level 3 | 25d | 2015-09-14 | 2015-10-15 | C-ELV-RMS-003 | 113d | 3d | 27,773.16 | GEN |
| C-ELV-RMS-005 |  | Installtion & Connection of Panels, Controller, switches, server etc..) at level 3 | 20d | 2016-01-03 | 2016-01-25 | C-ELV-RMS-004, C-ELV-RMS-235 | 175d | 0d | 27,773.16 |  |

Notes:
- C-MEP-AC-001: Expenses: 1 140612
- C-MEP-AC-002: Expenses: 1 30741.9
- C-MEP-AC-006: Expenses: 1 8821.1
- C-MEP-AC-007: Expenses: 1 2889.38
- C-MEP-AC-005: Expenses: 1 28274.5
- C-MEP-AC-003: Expenses: 1 186247
- C-MEP-AC-008: Expenses: 1 55880.9
- C-MEP-FF-001: Expenses: 1 45406.9
- C-MEP-FF-002: Expenses: 1 5280.67
- C-MEP-FF-003: Expenses: 1 18427.3
- C-MEP-FF-004: Expenses: 1 64097.4
- C-MEP-PD-2935: Expenses: 1 136683
- C-MEP-PD-001: Expenses: 1 83874.1
- C-MEP-PD-003: Expenses: 1 9573.63
- C-MEP-PD-2945: Expenses: 1 87476.9
- C-MEP-PD-002: Expenses: 1 30204.4
- C-MEP-PD-004: Expenses: 1 1651.42
- C-MEP-PD-005: Expenses: 1 13120.3
- C-ELV-RMS-002: Expenses: 1 2769.38
- C-ELV-RMS-001: Expenses: 1 11902.8
- C-ELV-RMS-003: Expenses: 1 11902.8
- C-ELV-RMS-004: Expenses: 1 27773.2
- C-ELV-RMS-005: Expenses: 1 27773.2

| ID | WBS | Activity | Duration | Start | Finish | Predecessors | Total float | Free float | Cost | AREA |
| --- | --- | --- | --- | --- | --- | --- | --- | --- | --- | --- |
|  | 12 | **Fire Alarm & Detection System** |  | 2015-07-23 | 2016-01-24 |  |  |  |  |  |
| C-ELV-FA-001 |  | Installation of FA first Fix Conduits, Boxes within block work , Gypsum Boards & Raised FLooring at level 3 | 20d | 2015-07-23 | 2015-08-15 | C-F-P-002, C-F-P-001, C-ELV-FA-205 | 115d | 0d | 13,660.92 | GEN |
| C-ELV-FA-002 |  | Installation of Cable Trays & Truncking at level 3 | 18d | 2015-07-26 | 2015-08-15 | C-ELV-MSPA-002 SS+5d, SD-CS-L3-512 | 110d | 0d | 2,769.38 |  |
| C-ELV-FA-003 |  | Installation of second fix (Cabling & Wirring etc..) at level 3 | 20d | 2015-08-16 | 2015-09-07 | C-ELV-FA-001, C-ELV-FA-002 | 118d | 0d | 22,768.2 | GEN |
| C-ELV-FA-004 |  | Installation & Connection of heat detector, smoke detector, flame detector etc.. at level 3 | 25d | 2015-09-08 | 2015-10-10 | C-ELV-FA-003 | 118d | 8d | 27,321.84 | GEN |
| C-ELV-FA-005 |  | Installtion & Connection of Racks & Panels at level 3 | 20d | 2016-01-02 | 2016-01-24 | C-ELV-FA-004, C-ELV-FA-235 | 156d | 0d | 27,321.84 |  |
|  | 2 | **Music System & Public Address System** |  | 2015-07-20 | 2015-12-01 |  |  |  |  |  |
| C-ELV-MSPA-002 |  | Installation of Cable Trays & Truncking at level 3 | 18d | 2015-07-20 | 2015-08-09 | C-ELV-RMS-002 SS+5d | 110d | 0d | 2,769.38 |  |
| C-ELV-MSPA-001 |  | Installation of MS/PA first fix (Conduits, Boxes within block work, Gypsum Boards & Raised FLooring at level 3 | 20d | 2015-07-23 | 2015-08-15 | C-F-P-002, C-F-P-001, SD-CS-L3-492, C-ELV-MSPA-205 | 62d | 0d | 6,994.34 | GEN |
| C-ELV-MSPA-003 |  | Installation of second fix (Cabling & Wirring etc..) at level 3 | 25d | 2015-08-16 | 2015-09-13 | C-ELV-MSPA-001, C-ELV-MSPA-002 | 113d | 0d | 6,994.34 | GEN |
| C-ELV-MSPA-004 |  | Installation & Connection of speakers, Amplifier & Controller at level 3 | 25d | 2015-09-14 | 2015-10-15 | C-ELV-MSPA-003 | 113d | 3d | 16,320.12 | GEN |
| C-ELV-MSPA-005 |  | Installtion & Connection of Media hub, panels and processor at level 3 | 20d | 2015-11-09 | 2015-12-01 | C-ELV-MSPA-004, C-ELV-MSPA-235 | 201d | 0d | 16,320.12 |  |
|  | 3 | **IP CCTV & Access Control System** |  | 2015-07-23 | 2016-02-08 |  |  |  |  |  |
| C-ELV-CCTV-001 |  | Installation of CCTV first Fix Conduits, Boxes within block work, Gypsum Boards & Raised FLooring at level 3 | 20d | 2015-07-23 | 2015-08-15 | C-F-P-002, C-F-P-001, SD-CS-L3-532, C-ELV-CCTV-205 | 122d | 0d | 8,161.35 | GEN |
| C-ELV-CCTV-002 |  | Installation of Cable Trays & Truncking at level 3 | 18d | 2015-08-01 | 2015-08-20 | C-ELV-FA-002 SS+5d | 110d | 0d | 2,769.38 |  |
| C-ELV-CCTV-003 |  | Installation of second fix (Cabling & Wirring etc..) at level 3 | 20d | 2015-08-22 | 2015-09-13 | C-ELV-CCTV-001, C-ELV-CCTV-002 | 120d | 0d | 19,043.14 | GEN |
| C-ELV-CCTV-004 |  | Installation & Connection of Camera's & Alarms at level 3 | 18d | 2015-09-14 | 2015-10-07 | C-ELV-CCTV-003 | 120d | 10d | 183,698.91 | GEN |
| C-ELV-CCTV-005 |  | Installtion & Connection of Racks, Panels etc... at level 3 | 25d | 2016-01-11 | 2016-02-08 | C-ELV-CCTV-004 FF, C-ELV-CCTV-235 | 123d | 0d | 7,322.52 |  |
|  | 7 | **Communication System** |  | 2015-05-30 | 2016-01-04 |  |  |  |  |  |
| C-ELV-CS-002 |  | Installation of Cable Trays & Truncking at level 3 | 18d | 2015-05-30 | 2015-06-18 | C-MEP-E-002 SS, C-ELV-CS-245 SS | 121d | 0d | 2,769.38 |  |
| C-ELV-CS-001 |  | Installation of CS first fix (Conduits, Boxes within block work, Gypsum Boards & Raised FLooring at level 3 | 20d | 2015-06-28 | 2015-07-22 | C-F-P-002, C-F-P-001, SD-CS-L3-452, C-ELV-CS-205 SS | 125d | 0d | 27,356.12 | GEN |
| C-ELV-CS-003 |  | Installation of second fix (Cabling & Wirring etc..) at level 3 | 25d | 2015-09-12 | 2015-10-13 | C-ELV-CS-001, C-ELV-CS-002, C-ELV-CS-215 | 115d | 0d | 82,068.35 | GEN |
| C-ELV-CS-004 |  | Installation & Connection of Wireless Access points & IP dect phone & RJ 45 at level 3 | 25d | 2015-10-14 | 2015-11-11 | C-ELV-CS-003 | 115d | 5d | 93,342.54 | GEN |
| C-ELV-CS-005 |  | Installtion & Connection of Controller & Instrumentation at level 3 | 20d | 2015-12-12 | 2016-01-04 | C-ELV-CS-004, C-ELV-CS-235 SS | 125d | 0d | 223,314.69 |  |

Notes:
- C-ELV-FA-001: Expenses: 1 13660.9
- C-ELV-FA-002: Expenses: 1 2769.38
- C-ELV-FA-003: Expenses: 1 22768.2
- C-ELV-FA-004: Expenses: 1 27321.8
- C-ELV-FA-005: Expenses: 1 27321.8
- C-ELV-MSPA-002: Expenses: 1 2769.38
- C-ELV-MSPA-001: Expenses: 1 6994.34
- C-ELV-MSPA-003: Expenses: 1 6994.34
- C-ELV-MSPA-004: Expenses: 1 16320.1
- C-ELV-MSPA-005: Expenses: 1 16320.1
- C-ELV-CCTV-001: Expenses: 1 8161.35
- C-ELV-CCTV-002: Expenses: 1 2769.38
- C-ELV-CCTV-003: Expenses: 1 19043.1
- C-ELV-CCTV-004: Expenses: 1 183699
- C-ELV-CCTV-005: Expenses: 1 7322.52
- C-ELV-CS-002: Expenses: 1 2769.38
- C-ELV-CS-001: Expenses: 1 27356.1
- C-ELV-CS-003: Expenses: 1 82068.4
- C-ELV-CS-004: Expenses: 1 93342.5
- C-ELV-CS-005: Expenses: 1 223315

| ID | WBS | Activity | Duration | Start | Finish | Predecessors | Total float | Free float | Cost | AREA |
| --- | --- | --- | --- | --- | --- | --- | --- | --- | --- | --- |
|  | 4 | **IP, SMATV & QAM Television System** |  | 2015-07-23 | 2016-01-11 |  |  |  |  |  |
| C-ELV-SMATV-001 |  | Installation of SMATV first Fix Conduits, Boxes within block work , Gypsum Boards & Raised FLooring at level 3 | 20d | 2015-07-23 | 2015-08-15 | C-F-P-002, C-F-P-001, SD-CS-L3-552, C-ELV-SMATV-205 | 126d | 0d | 4,452.18 | GEN |
| C-ELV-SMATV-002 |  | Installation of Cable Trays & Truncking at level 3 | 18d | 2015-08-06 | 2015-08-26 | C-ELV-CCTV-002 SS+5d | 110d | 0d | 2,769.38 |  |
| C-ELV-SMATV-003 |  | Installation of second fix (Cabling & Wirring etc..) at level 3 | 16d | 2015-08-27 | 2015-09-14 | C-ELV-SMATV-001, C-ELV-SMATV-002 | 119d | 0d | 10,388.41 | GEN |
| C-ELV-SMATV-004 |  | Installation & Connection of Outlets, switches and splitter at level 3 | 18d | 2015-09-15 | 2015-10-08 | C-ELV-SMATV-003 | 119d | 9d | 6,537.45 | GEN |
| C-ELV-SMATV-005 |  | Installtion & Connection of SMATV & QAM fiber & receiver at level 3 | 20d | 2015-12-20 | 2016-01-11 | C-ELV-SMATV-004, C-ELV-SMATV-235 | 167d | 0d | 2,419.21 |  |
|  | 5 | **BMS system** |  | 2015-07-23 | 2016-01-18 |  |  |  |  |  |
| C-MEP-BMS-001 |  | Installation of BMS first Fix Conduits, Boxes within block work , Gypsum Boards & Raised FLooring at level 3 | 20d | 2015-07-23 | 2015-08-15 | C-F-P-002, C-F-P-001, SD-CS-L3-432, C-MEP-BMS-205 | 119d | 0d | 8,895.95 | GEN |
| C-MEP-BMS-002 |  | Installation of Cable trays & Trunking at level 3 | 20d | 2015-08-12 | 2015-09-03 | C-ELV-SMATV-002 SS+5d, C-MEP-BMS-205 | 110d | 0d |  |  |
| C-MEP-BMS-003 |  | Installation of BMS Cabling & Wirring at level 3 | 16d | 2015-09-05 | 2015-09-26 | C-MEP-BMS-001, C-MEP-BMS-002 | 110d | 0d | 11,861.27 | GEN |
| C-MEP-BMS-004 |  | Installation & Connection of BMS Sensors, Relays, & Valves at level 3 | 20d | 2015-09-27 | 2015-10-19 | C-MEP-BMS-003, C-MEP-PD-004, C-MEP-PD-003, C-MEP-FF-003, C-MEP-AC-003, C-MEP-AC-006, C-MEP-AC-004 | 110d | 0d | 14,826.58 | GEN |
| C-MEP-BMS-005 |  | Installtion & Connection of BMS Racks, Panels etc... at level 3 | 20d | 2015-12-27 | 2016-01-18 | C-MEP-BMS-004, C-MEP-BMS-235 SS | 191d | 0d | 14,826.58 |  |
|  | 6 | **Gas System** |  | 2016-08-22 | 2016-10-11 |  |  |  |  |  |
| C-MEP-Gas-2915 |  | Installation & testing of Gas Pipes & Supports at level 3 | 20d | 2016-08-22 | 2016-09-17 | C-MEP-FF-002, C-MEP-PD-003, C-MEP-PD-004, C-MEP-Gas-2905 | 6d | 0d | 4,994.14 | GEN |
| C-MEP-Gas-2925 |  | Installation & testing of Gas Valves at level 3 | 20d | 2016-09-18 | 2016-10-11 | C-MEP-Gas-2915 | 6d | 0d | 3,329.43 |  |
|  | 26 | **MEP - Level 4** |  | 2015-05-17 | 2016-09-03 |  |  |  |  |  |
|  | 1 | **Electrical** |  | 2015-06-09 | 2016-09-03 |  |  |  |  |  |
| C-MEP-E-236 |  | Installation of Cable Trays & Truncking at level 4 | 18d | 2015-06-09 | 2015-06-29 | C-MEP-FF-124 SS+10d, C-MEP-PD-155 SS+5d, C-MEP-E-002 SS | 115d | 0d | 21,017.55 |  |
| C-MEP-E-186 |  | Installation of first Electrical Fix Conduits, Boxes within block work & Gypsum Boards at level 4 | 20d | 2015-06-15 | 2015-07-07 | C-F-P-93, C-MEP-E-001 SS | 104d | 0d | 55,235.7 | GEN |
| C-MEP-E-196 |  | Installation of Electrical Second Fix (Cabling & Wirring etc..). at level 4 | 18d | 2015-07-08 | 2015-07-30 | C-MEP-E-186, C-MEP-E-236, C-MEP-E-003 SS | 108d | 0d | 190,528.33 | GEN |
| C-MEP-E-206 |  | Installation & Connection of Electrical DB's, SMDB's at level 4 | 16d | 2015-08-01 | 2015-08-18 | C-MEP-E-196, C-MEP-E-86 SS, C-MEP-E-004 SS | 110d | 4d | 78,921.15 | GEN |
| C-MEP-E-226 |  | Installation & Connection of Lighting Fixtures & Sockets at level 4 | 14d | 2016-08-18 | 2016-09-03 | C-MEP-E-196, C-F-CF-247, C-F-CF-237, C-F-WF-134, C-F-WF-144, C-MEP-E-36, C-MEP-E-005, C-F-P-LSF-42 FF | 86d | 0d | 71,857.69 | GEN |
|  | 2 | **HVAC** |  | 2015-05-17 | 2016-05-01 |  |  |  |  |  |
| C-MEP-AC-248 |  | Installation of Ductwork, Insulation & Dampers at level 4 | 23d | 2015-05-17 | 2015-06-11 | C-F-P-93 SS, C-MEP-AC-8, SD-CS-L4-1252, C-MEP-AC-001 | 114d | 0d | 140,612.08 | GEN |
| C-MEP-AC-298 |  | Pressure testing of Ductwork at level 4 | 8d | 2015-06-13 | 2015-06-21 | C-MEP-AC-248, C-MEP-AC-004 | 114d | 0d |  | GEN |
| C-MEP-AC-268 |  | Installation of Chilled Water Pipes & Valves at level 4 | 25d | 2015-06-18 | 2015-07-19 | C-MEP-AC-248 SS+10d, C-MEP-AC-002 | 120d | 0d | 30,741.92 | GEN |
| C-MEP-AC-288 |  | Pressure testing & Insulation of Chilled Water Pipes at level 4 | 12d | 2015-08-01 | 2015-08-13 | C-MEP-AC-268, C-MEP-AC-006 | 121d | 0d | 8,821.1 | GEN |
| C-MEP-AC-278 |  | Installation of Chilled Water Pipes Control Devices & Isolator at level 4 | 8d | 2015-08-19 | 2015-08-27 | C-MEP-AC-288, C-MEP-AC-007 | 121d | 0d | 2,889.38 | GEN |
| C-MEP-AC-308 |  | Installation of HVAC equipments AHU's, FCU's, ERU's, VAV's, CAV's & Fans at level 4 | 25d | 2015-08-22 | 2015-09-19 | C-MEP-AC-298 FF, C-MEP-AC-288 FF, C-MEP-AC-248 SS, C-MEP-AC-003 SS | 110d | 8d | 35,453.88 | GEN |
| C-MEP-AC-258 |  | Installation of Silencers, Attenuators, Isolators & Detectors at level 4 | 12d | 2015-09-02 | 2015-09-15 | C-MEP-AC-298, C-MEP-AC-005 | 133d | 0d | 28,274.51 | GEN |
| C-MEP-AC-318 |  | Installation of Grilles, Diffusers & Controller at level 4 | 12d | 2016-04-18 | 2016-05-01 | C-MEP-AC-308, C-F-CF-247, C-F-CF-237, C-F-WF-144 FF, C-F-CF-237 FF, C-F-WF-134 FF, C-MEP-AC-78 | 180d | 23d | 55,880.87 | GEN |

Notes:
- C-ELV-SMATV-001: Expenses: 1 4452.18
- C-ELV-SMATV-002: Expenses: 1 2769.38
- C-ELV-SMATV-003: Expenses: 1 10388.4
- C-ELV-SMATV-004: Expenses: 1 6537.45
- C-ELV-SMATV-005: Expenses: 1 2419.21
- C-MEP-BMS-001: Expenses: 1 8895.95
- C-MEP-BMS-003: Expenses: 1 11861.3
- C-MEP-BMS-004: Expenses: 1 14826.6
- C-MEP-BMS-005: Expenses: 1 14826.6
- C-MEP-Gas-2915: Expenses: 1 4994.14
- C-MEP-Gas-2925: Expenses: 1 3329.43
- C-MEP-E-236: Expenses: 1 21017.5
- C-MEP-E-186: Expenses: 1 55235.7
- C-MEP-E-196: Expenses: 1 57962.7; 2 132566
- C-MEP-E-206: Expenses: 1 78921.1
- C-MEP-E-226: Expenses: 1 71857.7
- C-MEP-AC-248: Expenses: 1 140612
- C-MEP-AC-268: Expenses: 1 30741.9
- C-MEP-AC-288: Expenses: 1 8821.1
- C-MEP-AC-278: Expenses: 1 2889.38
- C-MEP-AC-308: Expenses: 1 35453.9
- C-MEP-AC-258: Expenses: 1 28274.5
- C-MEP-AC-318: Expenses: 1 55880.9

| ID | WBS | Activity | Duration | Start | Finish | Predecessors | Total float | Free float | Cost | AREA |
| --- | --- | --- | --- | --- | --- | --- | --- | --- | --- | --- |
|  | 3 | **Fire Fighting** |  | 2015-05-28 | 2016-03-09 |  |  |  |  |  |
| C-MEP-FF-124 |  | Installation of FIre fighting Pipes at level 4 | 25d | 2015-05-28 | 2015-06-25 | C-MEP-AC-248 SS+10d, SD-CS-L4-1272 | 115d | 0d | 45,406.88 | GEN |
| C-MEP-FF-144 |  | Pressure testing of fire fighting pipes at level 4 | 8d | 2015-06-27 | 2015-07-05 | C-MEP-FF-124, C-MEP-FF-002 | 130d | 0d | 5,280.67 | GEN |
| C-MEP-FF-134 |  | Installation of fire Fighting Valves at level 4 | 20d | 2015-08-29 | 2015-09-23 | C-MEP-FF-144, C-MEP-FF-003 | 97d | 0d | 18,427.34 | GEN |
| C-MEP-FF-154 |  | Installation of Fire Fighting Sprinklers & Fire hose Cabinets & Extinguishers at level 4 | 14d | 2016-02-23 | 2016-03-09 | C-MEP-FF-134, C-F-CF-237, C-F-CF-227, C-MEP-FF-144, C-MEP-FF-004 | 116d | 0d | 64,097.37 | GEN |
|  | 4 | **Plumbing & Drainage** |  | 2015-05-28 | 2016-04-25 |  |  |  |  |  |
| C-MEP-PD-155 |  | Installation of Water Pipes & Valves (Hot & Cold atc..) at level 4 | 20d | 2015-05-28 | 2015-06-20 | C-MEP-FF-124 SS, C-F-P-103, SD-CS-L4-1312 | 120d | 0d | 83,874.06 | GEN |
| C-MEP-PD-175 |  | Pressure testing & Insullation of water pipes at level 4 | 8d | 2015-06-21 | 2015-06-29 | C-MEP-PD-155, C-MEP-PD-003 | 159d | 0d | 9,573.63 | GEN |
| C-MEP-PD-165 |  | Installation drainage Pipes at level 4 | 25d | 2015-08-22 | 2015-09-19 | C-MEP-PD-155 SS, C-MEP-PD-002 | 102d | 0d | 30,204.4 | GEN |
| C-MEP-PD-185 |  | Pressure testing of drainage pipes at level 4 | 8d | 2015-09-23 | 2015-10-01 | C-MEP-PD-165, C-MEP-PD-004 | 102d | 0d | 1,651.42 | GEN |
| C-MEP-PD-195 |  | Installation of Outlets, Drains, Gullies, Cowls, & Clean out at level 4 | 20d | 2016-04-03 | 2016-04-25 | C-MEP-PD-175, C-MEP-PD-175 FF, C-F-FF-134, C-F-WF-134, C-F-FF-134 FF, C-F-WF-154, C-F-WF-134 FF, C-F-DW-134, C-F-P-LSF-42 FF | 179d | 15d | 13,120.28 | GEN |
|  | 7 | **ELV systems** |  | 2015-06-20 | 2016-02-18 |  |  |  |  |  |
|  | 1 | **Room Management System** |  | 2015-06-25 | 2016-02-18 |  |  |  |  |  |
| C-ELV-RMS-195 |  | Installation of Cable Trays & Truncking at level 4 | 25d | 2015-06-25 | 2015-07-26 | C-ELV-CS-195 SS+5d | 121d | 0d | 2,769.38 |  |
| C-ELV-RMS-155 |  | Installation of RMS first fix (Conduits, Boxes within block work , Gypsum Boards & Raised FLooring at level 4 | 20d | 2015-07-23 | 2015-08-15 | C-F-P-103, C-F-P-93, SD-CS-L4-1492, C-ELV-RMS-001 SS | 110d | 0d | 11,902.78 | GEN |
| C-ELV-RMS-165 |  | Installation of second fix (Cabling & Wirring etc..) at level 4 | 25d | 2015-08-16 | 2015-09-13 | C-ELV-RMS-155, C-ELV-RMS-195 | 110d | 0d | 11,902.78 | GEN |
| C-ELV-RMS-175 |  | Installation & Connection of ethernets & HVAC thermostates etc.. at level 4 | 25d | 2015-09-14 | 2015-10-15 | C-ELV-RMS-165 | 110d | 20d | 27,773.16 | GEN |
| C-ELV-RMS-185 |  | Installtion & Connection of Panels, Controller, switches, server etc..) at level 4 | 20d | 2016-01-26 | 2016-02-18 | C-ELV-RMS-175, C-ELV-RMS-005 | 175d | 0d | 27,773.16 |  |
|  | 12 | **Fire Alarm & Detection System** |  | 2015-07-07 | 2016-02-17 |  |  |  |  |  |
| C-ELV-FA-195 |  | Installation of Cable Trays & Truncking at level 4 | 25d | 2015-07-07 | 2015-08-06 | C-ELV-MSPA-195 SS+5d, SD-CS-L4-1532 | 121d | 0d | 2,769.38 |  |
| C-ELV-FA-155 |  | Installation of FA first Fix Conduits, Boxes within block work , Gypsum Boards & Raised FLooring at level 4 | 20d | 2015-07-23 | 2015-08-15 | C-F-P-103, C-F-P-93, C-ELV-FA-001 SS | 115d | 0d | 13,660.92 | GEN |
| C-ELV-FA-165 |  | Installation of second fix (Cabling & Wirring etc..) at level 4 | 20d | 2015-08-16 | 2015-09-07 | C-ELV-FA-155, C-ELV-FA-195 | 115d | 0d | 22,768.2 | GEN |
| C-ELV-FA-175 |  | Installation & Connection of heat detector, smoke detector, flame detector etc.. at level 4 | 25d | 2015-09-08 | 2015-10-10 | C-ELV-FA-165 | 115d | 25d | 27,321.84 | GEN |
| C-ELV-FA-185 |  | Installtion & Connection of Racks & Panels at level 4 | 20d | 2016-01-25 | 2016-02-17 | C-ELV-FA-175, C-ELV-FA-005 | 156d | 0d | 27,321.84 |  |

Notes:
- C-MEP-FF-124: Expenses: 1 45406.9
- C-MEP-FF-144: Expenses: 1 5280.67
- C-MEP-FF-134: Expenses: 1 18427.3
- C-MEP-FF-154: Expenses: 1 64097.4
- C-MEP-PD-155: Expenses: 1 83874.1
- C-MEP-PD-175: Expenses: 1 9573.63
- C-MEP-PD-165: Expenses: 1 30204.4
- C-MEP-PD-185: Expenses: 1 1651.42
- C-MEP-PD-195: Expenses: 1 13120.3
- C-ELV-RMS-195: Expenses: 1 2769.38
- C-ELV-RMS-155: Expenses: 1 11902.8
- C-ELV-RMS-165: Expenses: 1 11902.8
- C-ELV-RMS-175: Expenses: 1 27773.2
- C-ELV-RMS-185: Expenses: 1 27773.2
- C-ELV-FA-195: Expenses: 1 2769.38
- C-ELV-FA-155: Expenses: 1 13660.9
- C-ELV-FA-165: Expenses: 1 22768.2
- C-ELV-FA-175: Expenses: 1 27321.8
- C-ELV-FA-185: Expenses: 1 27321.8

| ID | WBS | Activity | Duration | Start | Finish | Predecessors | Total float | Free float | Cost | AREA |
| --- | --- | --- | --- | --- | --- | --- | --- | --- | --- | --- |
|  | 2 | **Music System & Public Address System** |  | 2015-07-01 | 2015-12-26 |  |  |  |  |  |
| C-ELV-MSPA-195 |  | Installation of Cable Trays & Truncking at level 4 | 25d | 2015-07-01 | 2015-08-01 | C-ELV-RMS-195 SS+5d | 121d | 0d | 2,769.38 |  |
| C-ELV-MSPA-155 |  | Installation of MS/PA first fix (Conduits, Boxes within block work, Gypsum Boards & Raised FLooring at level 4 | 20d | 2015-08-16 | 2015-09-07 | C-F-P-103, C-F-P-93, SD-CS-L4-1512, C-ELV-MSPA-001 | 62d | 0d | 6,994.34 | GEN |
| C-ELV-MSPA-165 |  | Installation of second fix (Cabling & Wirring etc..) at level 4 | 25d | 2015-09-08 | 2015-10-10 | C-ELV-MSPA-155, C-ELV-MSPA-195 | 90d | 0d | 6,994.34 | GEN |
| C-ELV-MSPA-175 |  | Installation & Connection of speakers, Amplifier & Controller at level 4 | 25d | 2015-10-11 | 2015-11-08 | C-ELV-MSPA-165 | 90d | 0d | 16,320.12 | GEN |
| C-ELV-MSPA-185 |  | Installtion & Connection of Media hub, panels and processor at level 4 | 20d | 2015-12-02 | 2015-12-26 | C-ELV-MSPA-175, C-ELV-MSPA-005 | 201d | 0d | 16,320.12 |  |
|  | 3 | **IP CCTV & Access Control System** |  | 2015-07-13 | 2016-02-08 |  |  |  |  |  |
| C-ELV-CCTV-195 |  | Installation of Cable Trays & Truncking at level 4 | 25d | 2015-07-13 | 2015-08-12 | C-ELV-FA-195 SS+5d | 121d | 0d | 2,769.38 |  |
| C-ELV-CCTV-155 |  | Installation of CCTV first Fix Conduits, Boxes within block work, Gypsum Boards & Raised FLooring at level 4 | 20d | 2015-07-23 | 2015-08-15 | C-F-P-103, C-F-P-93, SD-CS-L4-1552, C-ELV-CCTV-001 SS | 122d | 0d | 8,161.35 | GEN |
| C-ELV-CCTV-165 |  | Installation of second fix (Cabling & Wirring etc..) at level 4 | 20d | 2015-08-16 | 2015-09-07 | C-ELV-CCTV-155, C-ELV-CCTV-195 | 122d | 0d | 19,043.14 | GEN |
| C-ELV-CCTV-175 |  | Installation & Connection of Camera's & Alarms at level 4 | 18d | 2015-09-08 | 2015-10-01 | C-ELV-CCTV-165 | 122d | 32d | 183,698.91 | GEN |
| C-ELV-CCTV-185 |  | Installtion & Connection of Racks, Panels etc... at level 4 | 25d | 2016-01-11 | 2016-02-08 | C-ELV-CCTV-175 FF, C-ELV-CCTV-005 SS | 123d | 0d | 7,322.52 |  |
|  | 7 | **Communication System** |  | 2015-06-20 | 2016-01-04 |  |  |  |  |  |
| C-ELV-CS-195 |  | Installation of Cable Trays & Truncking at level 4 | 18d | 2015-06-20 | 2015-07-09 | C-MEP-E-236 SS, C-ELV-CS-002 | 121d | 0d | 2,769.38 |  |
| C-ELV-CS-155 |  | Installation of CS first fix (Conduits, Boxes within block work, Gypsum Boards & Raised Flooring at level 4 | 20d | 2015-06-28 | 2015-07-22 | C-F-P-103, C-F-P-93, SD-CS-L4-1472, C-ELV-CS-001 SS | 125d | 0d | 27,356.12 | GEN |
| C-ELV-CS-165 |  | Installation of second fix (Cabling & Wirring etc..) at level 4 | 25d | 2015-07-23 | 2015-08-20 | C-ELV-CS-155, C-ELV-CS-195 | 130d | 0d | 82,068.35 | GEN |
| C-ELV-CS-175 |  | Installation & Connection of Wireless Access points & IP dect phone & RJ 45 at level 4 | 25d | 2015-08-22 | 2015-09-19 | C-ELV-CS-165 | 130d | 40d | 93,342.54 | GEN |
| C-ELV-CS-185 |  | Installtion & Connection of Controller & Instrumentation at level 4 | 20d | 2015-12-12 | 2016-01-04 | C-ELV-CS-175, C-ELV-CS-005 SS | 125d | 0d | 223,314.69 |  |
|  | 4 | **IP, SMATV & QAM Television System** |  | 2015-07-21 | 2016-01-11 |  |  |  |  |  |
| C-ELV-SMATV-195 |  | Installation of Cable Trays & Truncking at level 4 | 25d | 2015-07-21 | 2015-08-18 | C-ELV-CCTV-195 SS+5d | 121d | 0d | 2,769.38 |  |
| C-ELV-SMATV-155 |  | Installation of SMATV first Fix Conduits, Boxes within block work , Gypsum Boards & Raised FLooring at level 4 | 20d | 2015-07-23 | 2015-08-15 | C-F-P-103, C-F-P-93, SD-CS-L4-1572, C-ELV-SMATV-001 SS | 126d | 0d | 4,452.18 | GEN |
| C-ELV-SMATV-165 |  | Installation of second fix (Cabling & Wirring etc..) at level 4 | 16d | 2015-08-19 | 2015-09-06 | C-ELV-SMATV-155, C-ELV-SMATV-195 | 123d | 0d | 10,388.41 | GEN |
| C-ELV-SMATV-175 |  | Installation & Connection of Outlets, switches and splitter at level 4 | 18d | 2015-09-07 | 2015-09-30 | C-ELV-SMATV-165 | 123d | 33d | 6,537.45 | GEN |
| C-ELV-SMATV-185 |  | Installtion & Connection of SMATV & QAM fiber & receiver at level 4 | 20d | 2015-12-20 | 2016-01-11 | C-ELV-SMATV-175, C-ELV-SMATV-005 SS | 167d | 0d | 2,419.21 |  |

Notes:
- C-ELV-MSPA-195: Expenses: 1 2769.38
- C-ELV-MSPA-155: Expenses: 1 6994.34
- C-ELV-MSPA-165: Expenses: 1 6994.34
- C-ELV-MSPA-175: Expenses: 1 16320.1
- C-ELV-MSPA-185: Expenses: 1 16320.1
- C-ELV-CCTV-195: Expenses: 1 2769.38
- C-ELV-CCTV-155: Expenses: 1 8161.35
- C-ELV-CCTV-165: Expenses: 1 19043.1
- C-ELV-CCTV-175: Expenses: 1 183699
- C-ELV-CCTV-185: Expenses: 1 7322.52
- C-ELV-CS-195: Expenses: 1 2769.38
- C-ELV-CS-155: Expenses: 1 27356.1
- C-ELV-CS-165: Expenses: 1 82068.4
- C-ELV-CS-175: Expenses: 1 93342.5
- C-ELV-CS-185: Expenses: 1 223315
- C-ELV-SMATV-195: Expenses: 1 2769.38
- C-ELV-SMATV-155: Expenses: 1 4452.18
- C-ELV-SMATV-165: Expenses: 1 10388.4
- C-ELV-SMATV-175: Expenses: 1 6537.45
- C-ELV-SMATV-185: Expenses: 1 2419.21

| ID | WBS | Activity | Duration | Start | Finish | Predecessors | Total float | Free float | Cost | AREA |
| --- | --- | --- | --- | --- | --- | --- | --- | --- | --- | --- |
|  | 5 | **BMS system** |  | 2015-07-23 | 2016-02-11 |  |  |  |  |  |
| C-MEP-BMS-155 |  | Installation of BMS first Fix Conduits, Boxes within block work , Gypsum Boards & Raised FLooring at level 4 | 20d | 2015-07-23 | 2015-08-15 | C-F-P-103, C-F-P-93, SD-CS-L4-1452, C-MEP-BMS-001 SS | 119d | 0d | 8,895.95 | GEN |
| C-MEP-BMS-195 |  | Installation of Cable trays & Trunking at level 4 | 20d | 2015-07-27 | 2015-08-18 | C-ELV-SMATV-195 SS+5d | 121d | 0d |  |  |
| C-MEP-BMS-165 |  | Installation of BMS Cabling & Wirring at level 4 | 16d | 2015-08-19 | 2015-09-06 | C-MEP-BMS-155, C-MEP-BMS-195 | 121d | 19d | 11,861.27 | GEN |
| C-MEP-BMS-175 |  | Installation & Connection of BMS Sensors, Relays, & Valves at level 4 | 20d | 2015-10-03 | 2015-10-25 | C-MEP-BMS-165, C-MEP-PD-185, C-MEP-PD-175, C-MEP-FF-134, C-MEP-AC-308, C-MEP-AC-288, C-MEP-AC-298 | 102d | 12d | 14,826.58 | GEN |
| C-MEP-BMS-185 |  | Installtion & Connection of BMS Racks, Panels etc... at level 4 | 20d | 2016-01-19 | 2016-02-11 | C-MEP-BMS-175, C-MEP-BMS-005 | 191d | 0d | 14,826.58 |  |
|  | 25 | **MEP - Level 5** |  | 2015-04-23 | 2016-09-22 |  |  |  |  |  |
|  | 1 | **Electrical** |  | 2015-06-09 | 2016-09-22 |  |  |  |  |  |
| C-MEP-E-356 |  | Installation of Cable Trays & Truncking at level 5 | 18d | 2015-06-09 | 2015-06-29 | C-MEP-FF-204 SS+10d, C-MEP-PD-255 SS+5d, C-MEP-E-236 SS | 115d | 7d | 21,017.55 |  |
| C-MEP-E-306 |  | Installation of first Electrical Fix Conduits, Boxes within block work & Gypsum Boards at level 5 | 20d | 2015-06-15 | 2015-07-07 | C-F-P-153, C-MEP-E-186 SS | 104d | 0d | 55,235.7 | GEN |
| C-MEP-E-316 |  | Installation of Electrical Second Fix (Cabling & Wirring etc..). at level 5 | 18d | 2015-07-08 | 2015-07-30 | C-MEP-E-306, C-MEP-E-356, C-MEP-E-196 SS | 108d | 14d | 190,528.33 | GEN |
| C-MEP-E-326 |  | Installation & Connection of Electrical DB's, SMDB's at level 5 | 16d | 2015-08-17 | 2015-09-03 | C-MEP-E-316, C-MEP-E-146, C-MEP-E-206 SS | 96d | 0d | 78,921.15 | GEN |
| C-MEP-E-346 |  | Installation & Connection of Lighting Fixtures & Sockets at level 5 | 14d | 2016-09-04 | 2016-09-22 | C-MEP-E-316, C-F-CF-387, C-F-CF-377, C-F-WF-214, C-F-WF-224, C-MEP-E-406, C-MEP-E-226, C-F-P-LSF-52 FF | 86d | 0d | 71,857.69 | GEN |
|  | 2 | **HVAC** |  | 2015-04-23 | 2016-06-07 |  |  |  |  |  |
| C-MEP-AC-408 |  | Installation of Ductwork, Insulation & Dampers at level 5 | 23d | 2015-04-23 | 2015-05-19 | C-F-P-153 SS, C-MEP-AC-488, SD-CS-L5-272 | 123d | 0d | 140,612.08 | GEN |
| C-MEP-AC-428 |  | Installation of Chilled Water Pipes & Valves at level 5 | 25d | 2015-06-18 | 2015-07-19 | C-MEP-AC-408 SS+10d, C-MEP-AC-268 SS | 120d | 0d | 30,741.92 | GEN |
| C-MEP-AC-458 |  | Pressure testing of Ductwork at level 5 | 8d | 2015-06-22 | 2015-06-30 | C-MEP-AC-408, C-MEP-AC-298 | 114d | 0d |  | GEN |
| C-MEP-AC-468 |  | Installation of HVAC equipments AHU's, FCU's, ERU's, VAV's, CAV's & Fans at level 5 | 25d | 2015-07-30 | 2015-08-27 | C-MEP-AC-458 FF, C-MEP-AC-448 FF, C-MEP-AC-408 SS | 158d | 40d | 46,388.48 | GEN |
| C-MEP-AC-448 |  | Pressure testing & Insulation of Chilled Water Pipes at level 5 | 12d | 2015-08-15 | 2015-08-27 | C-MEP-AC-428, C-MEP-AC-288 | 121d | 0d | 8,821.1 | GEN |
| C-MEP-AC-438 |  | Installation of Chilled Water Pipes Control Devices & Isolator at level 5 | 8d | 2015-08-29 | 2015-09-06 | C-MEP-AC-448, C-MEP-AC-278 | 121d | 0d | 2,889.38 | GEN |
| C-MEP-AC-418 |  | Installation of Silencers, Attenuators, Isolators & Detectors at level 5 | 12d | 2015-09-16 | 2015-10-03 | C-MEP-AC-458, C-MEP-AC-258 | 137d | 0d | 28,274.51 | GEN |
| C-MEP-AC-478 |  | Installation of Grilles, Diffusers & Controller at level 5 | 12d | 2016-05-25 | 2016-06-07 | C-MEP-AC-468, C-F-CF-387, C-F-CF-377, C-F-WF-224 FF, C-F-CF-377 FF, C-F-WF-214 FF, C-MEP-AC-558 | 148d | 0d | 55,880.87 | GEN |
|  | 3 | **Fire Fighting** |  | 2015-05-17 | 2016-03-26 |  |  |  |  |  |
| C-MEP-FF-204 |  | Installation of FIre fighting Pipes at level 5 | 25d | 2015-05-17 | 2015-06-14 | C-MEP-AC-408 SS+20d, SD-CS-L5-292 | 125d | 5d | 45,406.88 | GEN |
| C-MEP-FF-224 |  | Pressure testing of fire fighting pipes at level 5 | 8d | 2015-07-06 | 2015-07-14 | C-MEP-FF-204, C-MEP-FF-144 | 130d | 0d | 5,280.67 | GEN |
| C-MEP-FF-214 |  | Installation of fire Fighting Valves at level 5 | 20d | 2015-09-24 | 2015-10-17 | C-MEP-FF-224, C-MEP-FF-134 | 97d | 0d | 18,427.34 | GEN |
| C-MEP-FF-234 |  | Installation of Fire Fighting Sprinklers & Fire hose Cabinets & Extinguishers at level 5 | 14d | 2016-03-10 | 2016-03-26 | C-MEP-FF-214, C-F-CF-377, C-F-CF-367, C-MEP-FF-224, C-MEP-FF-154 | 116d | 0d | 64,097.37 | GEN |

Notes:
- C-MEP-BMS-155: Expenses: 1 8895.95
- C-MEP-BMS-165: Expenses: 1 11861.3
- C-MEP-BMS-175: Expenses: 1 14826.6
- C-MEP-BMS-185: Expenses: 1 14826.6
- C-MEP-E-356: Expenses: 1 21017.5
- C-MEP-E-306: Expenses: 1 55235.7
- C-MEP-E-316: Expenses: 1 57962.7; 2 132566
- C-MEP-E-326: Expenses: 1 78921.1
- C-MEP-E-346: Expenses: 1 71857.7
- C-MEP-AC-408: Expenses: 1 140612
- C-MEP-AC-428: Expenses: 1 30741.9
- C-MEP-AC-468: Expenses: 1 46388.5
- C-MEP-AC-448: Expenses: 1 8821.1
- C-MEP-AC-438: Expenses: 1 2889.38
- C-MEP-AC-418: Expenses: 1 28274.5
- C-MEP-AC-478: Expenses: 1 55880.9
- C-MEP-FF-204: Expenses: 1 45406.9
- C-MEP-FF-224: Expenses: 1 5280.67
- C-MEP-FF-214: Expenses: 1 18427.3
- C-MEP-FF-234: Expenses: 1 64097.4

| ID | WBS | Activity | Duration | Start | Finish | Predecessors | Total float | Free float | Cost | AREA |
| --- | --- | --- | --- | --- | --- | --- | --- | --- | --- | --- |
|  | 4 | **Plumbing & Drainage** |  | 2015-05-23 | 2016-04-26 |  |  |  |  |  |
| C-MEP-PD-255 |  | Installation of Water Pipes & Valves (Hot & Cold atc..) at level 5 | 20d | 2015-05-23 | 2015-06-14 | C-MEP-FF-204 SS, C-F-P-163, SD-CS-L5-332 | 125d | 10d | 83,874.06 | GEN |
| C-MEP-PD-275 |  | Pressure testing & Insullation of water pipes at level 5 | 8d | 2015-06-30 | 2015-07-08 | C-MEP-PD-255, C-MEP-PD-175 | 159d | 0d | 9,573.63 | GEN |
| C-MEP-PD-265 |  | Installation drainage Pipes at level 5 | 25d | 2015-08-22 | 2015-09-19 | C-MEP-PD-255 SS, C-MEP-PD-165 SS | 122d | 0d | 30,204.4 | GEN |
| C-MEP-PD-285 |  | Pressure testing of drainage pipes at level 5 | 8d | 2015-10-03 | 2015-10-11 | C-MEP-PD-265, C-MEP-PD-185 | 114d | 0d | 1,651.42 | GEN |
| C-MEP-PD-295 |  | Installation of Outlets, Drains, Gullies, Cowls, & Clean out at level 5 | 20d | 2016-04-04 | 2016-04-26 | C-MEP-PD-275, C-MEP-PD-275 FF, C-F-FF-214, C-F-WF-214, C-F-FF-214 FF, C-F-WF-234, C-F-WF-214 FF, C-F-DW-214, C-MEP-PD-45, C-F-P-LSF-52 FF | 188d | 34d | 13,120.28 | GEN |
|  | 7 | **ELV systems** |  | 2015-06-28 | 2016-03-13 |  |  |  |  |  |
|  | 1 | **Room Management System** |  | 2015-07-19 | 2016-03-13 |  |  |  |  |  |
| C-ELV-RMS-295 |  | Installation of Cable Trays & Truncking at level 5 | 25d | 2015-07-19 | 2015-08-16 | C-ELV-CS-295 SS+5d | 132d | 0d | 2,769.38 |  |
| C-ELV-RMS-255 |  | Installation of RMS first fix (Conduits, Boxes within block work , Gypsum Boards & Raised FLooring at level 5 | 20d | 2015-07-23 | 2015-08-15 | C-F-P-163, C-F-P-153, SD-CS-L5-512, C-ELV-RMS-155 SS | 118d | 0d | 11,902.78 | GEN |
| C-ELV-RMS-265 |  | Installation of second fix (Cabling & Wirring etc..) at level 5 | 25d | 2015-08-17 | 2015-09-14 | C-ELV-RMS-255, C-ELV-RMS-295 | 138d | 0d | 11,902.78 | GEN |
| C-ELV-RMS-275 |  | Installation & Connection of ethernets & HVAC thermostates etc.. at level 5 | 25d | 2015-09-15 | 2015-10-17 | C-ELV-RMS-265 | 138d | 20d | 27,773.16 | GEN |
| C-ELV-RMS-285 |  | Installtion & Connection of Panels, Controller, switches, server etc..) at level 5 | 20d | 2016-02-20 | 2016-03-13 | C-ELV-RMS-275, C-ELV-RMS-185 | 175d | 0d | 27,773.16 |  |
|  | 12 | **Fire Alarm & Detection System** |  | 2015-07-23 | 2016-02-17 |  |  |  |  |  |
| C-ELV-FA-255 |  | Installation of FA first Fix Conduits, Boxes within block work , Gypsum Boards & Raised FLooring at level 5 | 20d | 2015-07-23 | 2015-08-15 | C-F-P-163, C-F-P-153, C-ELV-FA-155 SS | 123d | 0d | 13,660.92 | GEN |
| C-ELV-FA-295 |  | Installation of Cable Trays & Truncking at level 5 | 25d | 2015-07-30 | 2015-08-27 | C-ELV-MSPA-295 SS+5d, SD-CS-L5-552 | 132d | 0d | 2,769.38 |  |
| C-ELV-FA-265 |  | Installation of second fix (Cabling & Wirring etc..) at level 5 | 20d | 2015-08-29 | 2015-09-23 | C-ELV-FA-255, C-ELV-FA-295 | 133d | 0d | 22,768.2 | GEN |
| C-ELV-FA-275 |  | Installation & Connection of heat detector, smoke detector, flame detector etc.. at level 5 | 25d | 2015-09-24 | 2015-10-22 | C-ELV-FA-265 | 133d | 15d | 27,321.84 | GEN |
| C-ELV-FA-285 |  | Installtion & Connection of Racks & Panels at level 5 | 20d | 2016-01-25 | 2016-02-17 | C-ELV-FA-275, C-ELV-FA-185 SS | 156d | 0d | 27,321.84 |  |
|  | 2 | **Music System & Public Address System** |  | 2015-07-25 | 2016-01-18 |  |  |  |  |  |
| C-ELV-MSPA-295 |  | Installation of Cable Trays & Truncking at level 5 | 25d | 2015-07-25 | 2015-08-22 | C-ELV-RMS-295 SS+5d | 132d | 0d | 2,769.38 |  |
| C-ELV-MSPA-255 |  | Installation of MS/PA first fix (Conduits, Boxes within block work, Gypsum Boards & Raised FLooring at level 5 | 20d | 2015-08-16 | 2015-09-07 | C-F-P-163, C-F-P-153, SD-CS-L5-532, C-ELV-MSPA-155 SS | 62d | 0d | 6,994.34 | GEN |
| C-ELV-MSPA-265 |  | Installation of second fix (Cabling & Wirring etc..) at level 5 | 25d | 2015-09-08 | 2015-10-10 | C-ELV-MSPA-255, C-ELV-MSPA-295 | 119d | 0d | 6,994.34 | GEN |
| C-ELV-MSPA-275 |  | Installation & Connection of speakers, Amplifier & Controller at level 5 | 25d | 2015-10-11 | 2015-11-08 | C-ELV-MSPA-265 | 119d | 1d | 16,320.12 | GEN |
| C-ELV-MSPA-285 |  | Installtion & Connection of Media hub, panels and processor at level 5 | 20d | 2015-12-27 | 2016-01-18 | C-ELV-MSPA-275, C-ELV-MSPA-185 | 201d | 0d | 16,320.12 |  |

Notes:
- C-MEP-PD-255: Expenses: 1 83874.1
- C-MEP-PD-275: Expenses: 1 9573.63
- C-MEP-PD-265: Expenses: 1 30204.4
- C-MEP-PD-285: Expenses: 1 1651.42
- C-MEP-PD-295: Expenses: 1 13120.3
- C-ELV-RMS-295: Expenses: 1 2769.38
- C-ELV-RMS-255: Expenses: 1 11902.8
- C-ELV-RMS-265: Expenses: 1 11902.8
- C-ELV-RMS-275: Expenses: 1 27773.2
- C-ELV-RMS-285: Expenses: 1 27773.2
- C-ELV-FA-255: Expenses: 1 13660.9
- C-ELV-FA-295: Expenses: 1 2769.38
- C-ELV-FA-265: Expenses: 1 22768.2
- C-ELV-FA-275: Expenses: 1 27321.8
- C-ELV-FA-285: Expenses: 1 27321.8
- C-ELV-MSPA-295: Expenses: 1 2769.38
- C-ELV-MSPA-255: Expenses: 1 6994.34
- C-ELV-MSPA-265: Expenses: 1 6994.34
- C-ELV-MSPA-275: Expenses: 1 16320.1
- C-ELV-MSPA-285: Expenses: 1 16320.1

| ID | WBS | Activity | Duration | Start | Finish | Predecessors | Total float | Free float | Cost | AREA |
| --- | --- | --- | --- | --- | --- | --- | --- | --- | --- | --- |
|  | 3 | **IP CCTV & Access Control System** |  | 2015-07-23 | 2016-02-08 |  |  |  |  |  |
| C-ELV-CCTV-255 |  | Installation of CCTV first Fix Conduits, Boxes within block work, Gypsum Boards & Raised FLooring at level 5 | 20d | 2015-07-23 | 2015-08-15 | C-F-P-163, C-F-P-153, SD-CS-L5-572, C-ELV-CCTV-155 SS | 137d | 0d | 8,161.35 | GEN |
| C-ELV-CCTV-295 |  | Installation of Cable Trays & Truncking at level 5 | 25d | 2015-08-05 | 2015-09-02 | C-ELV-FA-295 SS+5d | 132d | 0d | 2,769.38 |  |
| C-ELV-CCTV-265 |  | Installation of second fix (Cabling & Wirring etc..) at level 5 | 20d | 2015-09-03 | 2015-09-29 | C-ELV-CCTV-255, C-ELV-CCTV-295 | 135d | 0d | 19,043.14 | GEN |
| C-ELV-CCTV-275 |  | Installation & Connection of Camera's & Alarms at level 5 | 18d | 2015-09-30 | 2015-10-20 | C-ELV-CCTV-265 | 135d | 17d | 183,698.91 | GEN |
| C-ELV-CCTV-285 |  | Installtion & Connection of Racks, Panels etc... at level 5 | 25d | 2016-01-11 | 2016-02-08 | C-ELV-CCTV-275 FF, C-ELV-CCTV-185 SS | 123d | 0d | 7,322.52 |  |
|  | 7 | **Communication System** |  | 2015-06-28 | 2016-01-04 |  |  |  |  |  |
| C-ELV-CS-255 |  | Installation of CS first fix (Conduits, Boxes within block work, Gypsum Boards & Raised FLooring at level 5 | 20d | 2015-06-28 | 2015-07-22 | C-F-P-163, C-F-P-153, SD-CS-L5-492, C-ELV-CS-155 SS | 125d | 0d | 27,356.12 | GEN |
| C-ELV-CS-295 |  | Installation of Cable Trays & Truncking at level 5 | 18d | 2015-07-11 | 2015-08-02 | C-MEP-E-356 SS, C-ELV-CS-195 | 131d | 0d | 2,769.38 |  |
| C-ELV-CS-265 |  | Installation of second fix (Cabling & Wirring etc..) at level 5 | 25d | 2015-08-03 | 2015-08-31 | C-ELV-CS-255, C-ELV-CS-295 | 150d | 0d | 82,068.35 | GEN |
| C-ELV-CS-275 |  | Installation & Connection of Wireless Access points & IP dect phone & RJ 45 at level 5 | 25d | 2015-09-01 | 2015-10-03 | C-ELV-CS-265 | 150d | 32d | 93,342.54 | GEN |
| C-ELV-CS-285 |  | Installtion & Connection of Controller & Instrumentation at level 5 | 20d | 2015-12-12 | 2016-01-04 | C-ELV-CS-275, C-ELV-CS-85, C-ELV-CS-185 SS | 125d | 0d | 223,314.69 |  |
|  | 4 | **IP, SMATV & QAM Television System** |  | 2015-07-23 | 2016-01-11 |  |  |  |  |  |
| C-ELV-SMATV-255 |  | Installation of SMATV first Fix Conduits, Boxes within block work , Gypsum Boards & Raised FLooring at level 5 | 20d | 2015-07-23 | 2015-08-15 | C-F-P-163, C-F-P-153, SD-CS-L5-592, C-ELV-SMATV-155 SS | 134d | 0d | 4,452.18 | GEN |
| C-ELV-SMATV-295 |  | Installation of Cable Trays & Truncking at level 5 | 25d | 2015-08-11 | 2015-09-08 | C-ELV-CCTV-295 SS+5d | 132d | 0d | 2,769.38 |  |
| C-ELV-SMATV-265 |  | Installation of second fix (Cabling & Wirring etc..) at level 5 | 16d | 2015-09-09 | 2015-09-30 | C-ELV-SMATV-255, C-ELV-SMATV-295 | 134d | 0d | 10,388.41 | GEN |
| C-ELV-SMATV-275 |  | Installation & Connection of Outlets, switches and splitter at level 5 | 18d | 2015-10-01 | 2015-10-21 | C-ELV-SMATV-265 | 134d | 16d | 6,537.45 | GEN |
| C-ELV-SMATV-285 |  | Installtion & Connection of SMATV & QAM fiber & receiver at level 5 | 20d | 2015-12-20 | 2016-01-11 | C-ELV-SMATV-275, C-ELV-SMATV-185 SS | 167d | 0d | 2,419.21 |  |
|  | 5 | **BMS system** |  | 2015-07-23 | 2016-02-11 |  |  |  |  |  |
| C-MEP-BMS-255 |  | Installation of BMS first Fix Conduits, Boxes within block work , Gypsum Boards & Raised FLooring at level 5 | 20d | 2015-07-23 | 2015-08-15 | C-F-P-163, C-F-P-153, SD-CS-L5-472, C-MEP-BMS-155 SS | 119d | 0d | 8,895.95 | GEN |
| C-MEP-BMS-295 |  | Installation of Cable trays & Trunking at level 5 | 20d | 2015-08-17 | 2015-09-08 | C-ELV-SMATV-295 SS+5d | 132d | 0d |  |  |
| C-MEP-BMS-265 |  | Installation of BMS Cabling & Wirring at level 5 | 16d | 2015-09-09 | 2015-09-30 | C-MEP-BMS-255, C-MEP-BMS-295 | 132d | 14d | 11,861.27 | GEN |
| C-MEP-BMS-275 |  | Installation & Connection of BMS Sensors, Relays, & Valves at level 5 | 20d | 2015-10-18 | 2015-11-09 | C-MEP-BMS-265, C-MEP-PD-285, C-MEP-PD-275, C-MEP-FF-214, C-MEP-AC-468, C-MEP-AC-448, C-MEP-AC-458 | 118d | 0d | 14,826.58 | GEN |
| C-MEP-BMS-285 |  | Installtion & Connection of BMS Racks, Panels etc... at level 5 | 20d | 2016-01-19 | 2016-02-11 | C-MEP-BMS-275, C-MEP-BMS-185 SS | 191d | 0d | 14,826.58 |  |

Notes:
- C-ELV-CCTV-255: Expenses: 1 8161.35
- C-ELV-CCTV-295: Expenses: 1 2769.38
- C-ELV-CCTV-265: Expenses: 1 19043.1
- C-ELV-CCTV-275: Expenses: 1 183699
- C-ELV-CCTV-285: Expenses: 1 7322.52
- C-ELV-CS-255: Expenses: 1 27356.1
- C-ELV-CS-295: Expenses: 1 2769.38
- C-ELV-CS-265: Expenses: 1 82068.4
- C-ELV-CS-275: Expenses: 1 93342.5
- C-ELV-CS-285: Expenses: 1 223315
- C-ELV-SMATV-255: Expenses: 1 4452.18
- C-ELV-SMATV-295: Expenses: 1 2769.38
- C-ELV-SMATV-265: Expenses: 1 10388.4
- C-ELV-SMATV-275: Expenses: 1 6537.45
- C-ELV-SMATV-285: Expenses: 1 2419.21
- C-MEP-BMS-255: Expenses: 1 8895.95
- C-MEP-BMS-265: Expenses: 1 11861.3
- C-MEP-BMS-275: Expenses: 1 14826.6
- C-MEP-BMS-285: Expenses: 1 14826.6

| ID | WBS | Activity | Duration | Start | Finish | Predecessors | Total float | Free float | Cost | AREA |
| --- | --- | --- | --- | --- | --- | --- | --- | --- | --- | --- |
|  | 24 | **MEP - Level 6** |  | 2015-05-02 | 2016-07-16 |  |  |  |  |  |
|  | 1 | **Electrical** |  | 2015-06-06 | 2016-07-16 |  |  |  |  |  |
| C-MEP-E-536 |  | Installation of Cable Trays & Truncking at level 6 | 18d | 2015-06-06 | 2015-06-25 | C-MEP-FF-324 SS+10d, C-MEP-PD-405 SS+5d, C-MEP-E-56 | 134d | 30d | 21,017.55 |  |
| C-MEP-E-486 |  | Installation of first Electrical Fix Conduits, Boxes within block work & Gypsum Boards at level 6 | 20d | 2015-07-08 | 2015-08-02 | C-F-P-243, C-MEP-E-6, C-MEP-E-306 | 104d | 0d | 55,235.7 | GEN |
| C-MEP-E-496 |  | Installation of Electrical Second Fix (Cabling & Wirring etc..). at level 6 | 18d | 2015-08-03 | 2015-08-23 | C-MEP-E-486, C-MEP-E-536, C-MEP-E-16 | 104d | 0d | 190,528.33 | GEN |
| C-MEP-E-506 |  | Installation & Connection of Electrical DB's, SMDB's at level 6 | 16d | 2015-08-24 | 2015-09-10 | C-MEP-E-496, C-MEP-E-266 SS | 104d | 0d | 78,921.15 | GEN |
| C-MEP-E-526 |  | Installation & Connection of Lighting Fixtures & Sockets at level 6 | 14d | 2016-06-27 | 2016-07-16 | C-MEP-E-496, C-F-CF-597, C-F-CF-587, C-F-WF-334, C-F-WF-344, C-MEP-E-106, C-F-P-LSF-62 FF | 142d | 0d | 71,857.69 | GEN |
|  | 2 | **HVAC** |  | 2015-05-02 | 2016-04-26 |  |  |  |  |  |
| C-MEP-AC-648 |  | Installation of Ductwork, Insulation & Dampers at level 6 | 23d | 2015-05-02 | 2015-05-27 | C-F-P-243 SS, C-MEP-AC-88, SD-CS-L6-292 | 127d | 0d | 140,612.08 | GEN |
| C-MEP-AC-668 |  | Installation of Chilled Water Pipes & Valves at level 6 | 25d | 2015-06-18 | 2015-07-19 | C-MEP-AC-648 SS+10d, C-MEP-AC-428 SS | 120d | 0d | 30,741.92 | GEN |
| C-MEP-AC-698 |  | Pressure testing of Ductwork at level 6 | 8d | 2015-07-01 | 2015-07-09 | C-MEP-AC-648, C-MEP-AC-458 | 114d | 0d |  | GEN |
| C-MEP-AC-708 |  | Installation of HVAC equipments AHU's, FCU's, ERU's, VAV's, CAV's & Fans at level 6 | 25d | 2015-07-02 | 2015-08-02 | C-MEP-AC-698 FF, C-MEP-AC-688 FF, C-MEP-AC-648 SS | 179d | 82d | 46,388.48 | GEN |
| C-MEP-AC-688 |  | Pressure testing & Insulation of Chilled Water Pipes at level 6 | 12d | 2015-07-20 | 2015-08-02 | C-MEP-AC-668, C-MEP-AC-128 SS | 120d | 0d | 8,821.1 | GEN |
| C-MEP-AC-678 |  | Installation of Chilled Water Pipes Control Devices & Isolator at level 6 | 8d | 2015-09-07 | 2015-09-15 | C-MEP-AC-688, C-MEP-AC-438 | 121d | 0d | 2,889.38 | GEN |
| C-MEP-AC-658 |  | Installation of Silencers, Attenuators, Isolators & Detectors at level 6 | 12d | 2015-10-04 | 2015-10-17 | C-MEP-AC-698, C-MEP-AC-418 | 137d | 0d | 28,274.51 | GEN |
| C-MEP-AC-718 |  | Installation of Grilles, Diffusers & Controller at level 6 | 12d | 2016-04-13 | 2016-04-26 | C-MEP-AC-708, C-F-CF-597, C-F-CF-587, C-F-WF-344 FF, C-F-CF-587 FF, C-F-WF-334 FF, C-MEP-AC-158 | 190d | 47d | 55,880.87 | GEN |
|  | 3 | **Fire Fighting** |  | 2015-05-13 | 2016-03-26 |  |  |  |  |  |
| C-MEP-FF-324 |  | Installation of FIre fighting Pipes at level 6 | 25d | 2015-05-13 | 2015-06-10 | C-MEP-AC-648 SS+10d, SD-CS-L6-312 | 144d | 10d | 45,406.88 | GEN |
| C-MEP-FF-344 |  | Pressure testing of fire fighting pipes at level 6 | 8d | 2015-07-18 | 2015-07-26 | C-MEP-FF-324, C-MEP-FF-224 | 130d | 0d | 5,280.67 | GEN |
| C-MEP-FF-334 |  | Installation of fire Fighting Valves at level 6 | 20d | 2015-10-18 | 2015-11-09 | C-MEP-FF-344, C-MEP-FF-214 | 97d | 0d | 18,427.34 | GEN |
| C-MEP-FF-354 |  | Installation of Fire Fighting Sprinklers & Fire hose Cabinets & Extinguishers at level 6 | 14d | 2016-03-10 | 2016-03-26 | C-MEP-FF-334, C-F-CF-587, C-F-CF-577, C-MEP-FF-344, C-MEP-FF-234 SS | 116d | 0d | 64,097.37 | GEN |
|  | 4 | **Plumbing & Drainage** |  | 2015-05-31 | 2016-06-11 |  |  |  |  |  |
| C-MEP-PD-405 |  | Installation of Water Pipes & Valves (Hot & Cold atc..) at level 6 | 20d | 2015-05-31 | 2015-06-22 | C-MEP-FF-324 SS, C-F-P-253, SD-CS-L6-352 | 134d | 0d | 83,874.06 | GEN |
| C-MEP-PD-425 |  | Pressure testing & Insullation of water pipes at level 6 | 8d | 2015-07-09 | 2015-07-20 | C-MEP-PD-405, C-MEP-PD-275 | 159d | 0d | 9,573.63 | GEN |
| C-MEP-PD-415 |  | Installation drainage Pipes at level 6 | 25d | 2015-08-22 | 2015-09-19 | C-MEP-PD-405 SS, C-MEP-PD-265 SS | 131d | 0d | 30,204.4 | GEN |
| C-MEP-PD-435 |  | Pressure testing of drainage pipes at level 6 | 8d | 2015-10-12 | 2015-10-20 | C-MEP-PD-415 SS, C-MEP-PD-285 | 114d | 0d | 1,651.42 | GEN |
| C-MEP-PD-445 |  | Installation of Outlets, Drains, Gullies, Cowls, & Clean out at level 6 | 20d | 2016-05-19 | 2016-06-11 | C-MEP-PD-425, C-MEP-PD-425 FF, C-F-FF-334, C-F-WF-334, C-F-FF-334 FF, C-F-WF-354, C-F-WF-334 FF, C-F-DW-334, C-MEP-PD-345, C-F-P-LSF-62 FF | 149d | 0d | 13,120.28 | GEN |

Notes:
- C-MEP-E-536: Expenses: 1 21017.5
- C-MEP-E-486: Expenses: 1 55235.7
- C-MEP-E-496: Expenses: 1 57962.7; 2 132566
- C-MEP-E-506: Expenses: 1 78921.1
- C-MEP-E-526: Expenses: 1 71857.7
- C-MEP-AC-648: Expenses: 1 140612
- C-MEP-AC-668: Expenses: 1 30741.9
- C-MEP-AC-708: Expenses: 1 46388.5
- C-MEP-AC-688: Expenses: 1 8821.1
- C-MEP-AC-678: Expenses: 1 2889.38
- C-MEP-AC-658: Expenses: 1 28274.5
- C-MEP-AC-718: Expenses: 1 55880.9
- C-MEP-FF-324: Expenses: 1 45406.9
- C-MEP-FF-344: Expenses: 1 5280.67
- C-MEP-FF-334: Expenses: 1 18427.3
- C-MEP-FF-354: Expenses: 1 64097.4
- C-MEP-PD-405: Expenses: 1 83874.1
- C-MEP-PD-425: Expenses: 1 9573.63
- C-MEP-PD-415: Expenses: 1 30204.4
- C-MEP-PD-435: Expenses: 1 1651.42
- C-MEP-PD-445: Expenses: 1 13120.3

| ID | WBS | Activity | Duration | Start | Finish | Predecessors | Total float | Free float | Cost | AREA |
| --- | --- | --- | --- | --- | --- | --- | --- | --- | --- | --- |
|  | 7 | **ELV systems** |  | 2015-06-28 | 2016-03-13 |  |  |  |  |  |
|  | 1 | **Room Management System** |  | 2015-07-19 | 2016-03-13 |  |  |  |  |  |
| C-ELV-RMS-445 |  | Installation of Cable Trays & Truncking at level 6 | 25d | 2015-07-19 | 2015-08-16 | C-ELV-CS-445 SS+5d | 131d | 0d | 2,769.38 |  |
| C-ELV-RMS-405 |  | Installation of RMS first fix (Conduits, Boxes within block work , Gypsum Boards & Raised FLooring at level 6 | 20d | 2015-08-16 | 2015-09-07 | C-F-P-253, C-F-P-243, SD-CS-L6-532, C-ELV-RMS-255 | 118d | 0d | 11,902.78 | GEN |
| C-ELV-RMS-415 |  | Installation of second fix (Cabling & Wirring etc..) at level 6 | 25d | 2015-09-08 | 2015-10-10 | C-ELV-RMS-405, C-ELV-RMS-445 | 118d | 0d | 11,902.78 | GEN |
| C-ELV-RMS-425 |  | Installation & Connection of ethernets & HVAC thermostates etc.. at level 6 | 25d | 2015-10-11 | 2015-11-08 | C-ELV-RMS-415 | 118d | 21d | 27,773.16 | GEN |
| C-ELV-RMS-435 |  | Installtion & Connection of Panels, Controller, switches, server etc..) at level 6 | 20d | 2016-02-20 | 2016-03-13 | C-ELV-RMS-425, C-ELV-RMS-285 SS | 175d | 0d | 27,773.16 |  |
|  | 12 | **Fire Alarm & Detection System** |  | 2015-07-30 | 2016-02-17 |  |  |  |  |  |
| C-ELV-FA-445 |  | Installation of Cable Trays & Truncking at level 6 | 25d | 2015-07-30 | 2015-08-27 | C-ELV-MSPA-445 SS+5d, SD-CS-L6-572 | 131d | 0d | 2,769.38 |  |
| C-ELV-FA-405 |  | Installation of FA first Fix Conduits, Boxes within block work , Gypsum Boards & Raised FLooring at level 6 | 20d | 2015-08-16 | 2015-09-07 | C-F-P-253, C-F-P-243, C-ELV-FA-255 | 123d | 0d | 13,660.92 | GEN |
| C-ELV-FA-415 |  | Installation of second fix (Cabling & Wirring etc..) at level 6 | 20d | 2015-09-08 | 2015-10-04 | C-ELV-FA-405, C-ELV-FA-445 | 123d | 0d | 22,768.2 | GEN |
| C-ELV-FA-425 |  | Installation & Connection of heat detector, smoke detector, flame detector etc.. at level 6 | 25d | 2015-10-05 | 2015-11-02 | C-ELV-FA-415 | 123d | 26d | 27,321.84 | GEN |
| C-ELV-FA-435 |  | Installtion & Connection of Racks & Panels at level 6 | 20d | 2016-01-25 | 2016-02-17 | C-ELV-FA-425, C-ELV-FA-285 SS | 156d | 0d | 27,321.84 |  |
|  | 2 | **Music System & Public Address System** |  | 2015-07-25 | 2016-02-11 |  |  |  |  |  |
| C-ELV-MSPA-445 |  | Installation of Cable Trays & Truncking at level 6 | 25d | 2015-07-25 | 2015-08-22 | C-ELV-RMS-445 SS+5d | 131d | 0d | 2,769.38 |  |
| C-ELV-MSPA-405 |  | Installation of MS/PA first fix (Conduits, Boxes within block work, Gypsum Boards & Raised FLooring at level 6 | 20d | 2015-09-08 | 2015-10-04 | C-F-P-253, C-F-P-243, SD-CS-L6-552, C-ELV-MSPA-255 | 62d | 0d | 6,994.34 | GEN |
| C-ELV-MSPA-415 |  | Installation of second fix (Cabling & Wirring etc..) at level 6 | 25d | 2015-10-05 | 2015-11-02 | C-ELV-MSPA-405, C-ELV-MSPA-445 | 98d | 0d | 6,994.34 | GEN |
| C-ELV-MSPA-425 |  | Installation & Connection of speakers, Amplifier & Controller at level 6 | 25d | 2015-11-03 | 2015-12-01 | C-ELV-MSPA-415 | 98d | 1d | 16,320.12 | GEN |
| C-ELV-MSPA-435 |  | Installtion & Connection of Media hub, panels and processor at level 6 | 20d | 2016-01-19 | 2016-02-11 | C-ELV-MSPA-425, C-ELV-MSPA-285 | 201d | 0d | 16,320.12 |  |
|  | 3 | **IP CCTV & Access Control System** |  | 2015-07-23 | 2016-02-08 |  |  |  |  |  |
| C-ELV-CCTV-405 |  | Installation of CCTV first Fix Conduits, Boxes within block work, Gypsum Boards & Raised FLooring at level 6 | 20d | 2015-07-23 | 2015-08-15 | C-F-P-253, C-F-P-243, SD-CS-L6-592, C-ELV-CCTV-255 SS | 137d | 0d | 8,161.35 | GEN |
| C-ELV-CCTV-445 |  | Installation of Cable Trays & Truncking at level 6 | 25d | 2015-08-05 | 2015-09-02 | C-ELV-FA-445 SS+5d | 131d | 0d | 2,769.38 |  |
| C-ELV-CCTV-415 |  | Installation of second fix (Cabling & Wirring etc..) at level 6 | 20d | 2015-09-03 | 2015-09-29 | C-ELV-CCTV-405, C-ELV-CCTV-445 | 134d | 0d | 19,043.14 | GEN |
| C-ELV-CCTV-425 |  | Installation & Connection of Camera's & Alarms at level 6 | 18d | 2015-09-30 | 2015-10-20 | C-ELV-CCTV-415 | 134d | 37d | 183,698.91 | GEN |
| C-ELV-CCTV-435 |  | Installtion & Connection of Racks, Panels etc... at level 6 | 25d | 2016-01-11 | 2016-02-08 | C-ELV-CCTV-425 FF, C-ELV-CCTV-285 SS | 123d | 0d | 7,322.52 |  |

Notes:
- C-ELV-RMS-445: Expenses: 1 2769.38
- C-ELV-RMS-405: Expenses: 1 11902.8
- C-ELV-RMS-415: Expenses: 1 11902.8
- C-ELV-RMS-425: Expenses: 1 27773.2
- C-ELV-RMS-435: Expenses: 1 27773.2
- C-ELV-FA-445: Expenses: 1 2769.38
- C-ELV-FA-405: Expenses: 1 13660.9
- C-ELV-FA-415: Expenses: 1 22768.2
- C-ELV-FA-425: Expenses: 1 27321.8
- C-ELV-FA-435: Expenses: 1 27321.8
- C-ELV-MSPA-445: Expenses: 1 2769.38
- C-ELV-MSPA-405: Expenses: 1 6994.34
- C-ELV-MSPA-415: Expenses: 1 6994.34
- C-ELV-MSPA-425: Expenses: 1 16320.1
- C-ELV-MSPA-435: Expenses: 1 16320.1
- C-ELV-CCTV-405: Expenses: 1 8161.35
- C-ELV-CCTV-445: Expenses: 1 2769.38
- C-ELV-CCTV-415: Expenses: 1 19043.1
- C-ELV-CCTV-425: Expenses: 1 183699
- C-ELV-CCTV-435: Expenses: 1 7322.52

| ID | WBS | Activity | Duration | Start | Finish | Predecessors | Total float | Free float | Cost | AREA |
| --- | --- | --- | --- | --- | --- | --- | --- | --- | --- | --- |
|  | 7 | **Communication System** |  | 2015-06-28 | 2016-01-27 |  |  |  |  |  |
| C-ELV-CS-405 |  | Installation of CS first fix (Conduits, Boxes within block work, Gypsum Boards & Raised FLooring at level 6 | 20d | 2015-06-28 | 2015-07-22 | C-F-P-253, C-F-P-243, SD-CS-L6-512, C-ELV-CS-255 SS | 125d | 0d | 27,356.12 | GEN |
| C-ELV-CS-445 |  | Installation of Cable Trays & Truncking at level 6 | 18d | 2015-07-11 | 2015-08-02 | C-MEP-E-536 SS, C-ELV-CS-295 SS | 131d | 0d | 2,769.38 |  |
| C-ELV-CS-415 |  | Installation of second fix (Cabling & Wirring etc..) at level 6 | 25d | 2015-08-03 | 2015-08-31 | C-ELV-CS-405, C-ELV-CS-445 | 149d | 0d | 82,068.35 | GEN |
| C-ELV-CS-425 |  | Installation & Connection of Wireless Access points & IP dect phone & RJ 45 at level 6 | 25d | 2015-09-01 | 2015-10-03 | C-ELV-CS-415 | 149d | 52d | 93,342.54 | GEN |
| C-ELV-CS-435 |  | Installtion & Connection of Controller & Instrumentation at level 6 | 20d | 2016-01-05 | 2016-01-27 | C-ELV-CS-425, C-ELV-CS-285 | 125d | 0d | 223,314.69 |  |
|  | 4 | **IP, SMATV & QAM Television System** |  | 2015-08-11 | 2016-01-11 |  |  |  |  |  |
| C-ELV-SMATV-445 |  | Installation of Cable Trays & Truncking at level 6 | 25d | 2015-08-11 | 2015-09-08 | C-ELV-CCTV-445 SS+5d | 131d | 0d | 2,769.38 |  |
| C-ELV-SMATV-405 |  | Installation of SMATV first Fix Conduits, Boxes within block work , Gypsum Boards & Raised FLooring at level 6 | 20d | 2015-08-16 | 2015-09-07 | C-F-P-253, C-F-P-243, SD-CS-L6-612, C-ELV-SMATV-255 | 134d | 0d | 4,452.18 | GEN |
| C-ELV-SMATV-415 |  | Installation of second fix (Cabling & Wirring etc..) at level 6 | 16d | 2015-09-09 | 2015-09-30 | C-ELV-SMATV-405, C-ELV-SMATV-445 | 133d | 0d | 10,388.41 | GEN |
| C-ELV-SMATV-425 |  | Installation & Connection of Outlets, switches and splitter at level 6 | 18d | 2015-10-01 | 2015-10-21 | C-ELV-SMATV-415 | 133d | 36d | 6,537.45 | GEN |
| C-ELV-SMATV-435 |  | Installtion & Connection of SMATV & QAM fiber & receiver at level 6 | 20d | 2015-12-20 | 2016-01-11 | C-ELV-SMATV-425, C-ELV-SMATV-285 SS | 167d | 0d | 2,419.21 |  |
|  | 5 | **BMS system** |  | 2015-08-16 | 2016-02-11 |  |  |  |  |  |
| C-MEP-BMS-405 |  | Installation of BMS first Fix Conduits, Boxes within block work , Gypsum Boards & Raised FLooring at level 6 | 20d | 2015-08-16 | 2015-09-07 | C-F-P-253, C-F-P-243, SD-CS-L6-492, C-MEP-BMS-255 | 119d | 0d | 8,895.95 | GEN |
| C-MEP-BMS-445 |  | Installation of Cable trays & Trunking at level 6 | 20d | 2015-08-17 | 2015-09-08 | C-ELV-SMATV-445 SS+5d | 131d | 0d |  |  |
| C-MEP-BMS-415 |  | Installation of BMS Cabling & Wirring at level 6 | 16d | 2015-09-09 | 2015-09-30 | C-MEP-BMS-405, C-MEP-BMS-445 | 131d | 34d | 11,861.27 | GEN |
| C-MEP-BMS-425 |  | Installation & Connection of BMS Sensors, Relays, & Valves at level 6 | 20d | 2015-11-10 | 2015-12-02 | C-MEP-BMS-415, C-MEP-PD-435, C-MEP-PD-425, C-MEP-FF-334, C-MEP-AC-708, C-MEP-AC-688, C-MEP-AC-698 | 97d | 0d | 14,826.58 | GEN |
| C-MEP-BMS-435 |  | Installtion & Connection of BMS Racks, Panels etc... at level 6 | 20d | 2016-01-19 | 2016-02-11 | C-MEP-BMS-425, C-MEP-BMS-285 SS | 191d | 0d | 14,826.58 |  |
|  | 23 | **MEP - Level 7** |  | 2015-05-10 | 2016-08-01 |  |  |  |  |  |
|  | 1 | **Electrical** |  | 2015-06-14 | 2016-08-01 |  |  |  |  |  |
| C-MEP-E-896 |  | Installation of Cable Trays & Truncking at level 7 | 18d | 2015-06-14 | 2015-07-04 | C-MEP-FF-564 SS+10d, C-MEP-PD-705 SS+5d, C-MEP-E-416 | 155d | 23d | 21,017.55 |  |
| C-MEP-E-846 |  | Installation of first Electrical Fix Conduits, Boxes within block work & Gypsum Boards at level 7 | 20d | 2015-08-03 | 2015-08-25 | C-F-P-423, C-MEP-E-366, C-MEP-E-486 | 128d | 0d | 55,235.7 | GEN |
| C-MEP-E-856 |  | Installation of Electrical Second Fix (Cabling & Wirring etc..). at level 7 | 18d | 2015-08-26 | 2015-09-15 | C-MEP-E-846, C-MEP-E-896, C-MEP-E-376 | 138d | 0d | 190,528.33 | GEN |
| C-MEP-E-866 |  | Installation & Connection of Electrical DB's, SMDB's at level 7 | 16d | 2015-09-16 | 2015-10-07 | C-MEP-E-856, C-MEP-E-004 SS | 148d | 0d | 78,921.15 | GEN |
| C-MEP-E-886 |  | Installation & Connection of Lighting Fixtures & Sockets at level 7 | 14d | 2016-07-17 | 2016-08-01 | C-MEP-E-856, C-F-CF-1017, C-F-CF-1007, C-F-WF-574, C-F-WF-584, C-MEP-E-166, C-F-P-LSF-372 | 118d | 0d | 71,857.69 | GEN |

Notes:
- C-ELV-CS-405: Expenses: 1 27356.1
- C-ELV-CS-445: Expenses: 1 2769.38
- C-ELV-CS-415: Expenses: 1 82068.4
- C-ELV-CS-425: Expenses: 1 93342.5
- C-ELV-CS-435: Expenses: 1 223315
- C-ELV-SMATV-445: Expenses: 1 2769.38
- C-ELV-SMATV-405: Expenses: 1 4452.18
- C-ELV-SMATV-415: Expenses: 1 10388.4
- C-ELV-SMATV-425: Expenses: 1 6537.45
- C-ELV-SMATV-435: Expenses: 1 2419.21
- C-MEP-BMS-405: Expenses: 1 8895.95
- C-MEP-BMS-415: Expenses: 1 11861.3
- C-MEP-BMS-425: Expenses: 1 14826.6
- C-MEP-BMS-435: Expenses: 1 14826.6
- C-MEP-E-896: Expenses: 1 21017.5
- C-MEP-E-846: Expenses: 1 55235.7
- C-MEP-E-856: Expenses: 1 57962.7; 2 132566
- C-MEP-E-866: Expenses: 1 78921.1
- C-MEP-E-886: Expenses: 1 71857.7

| ID | WBS | Activity | Duration | Start | Finish | Predecessors | Total float | Free float | Cost | AREA |
| --- | --- | --- | --- | --- | --- | --- | --- | --- | --- | --- |
|  | 2 | **HVAC** |  | 2015-05-10 | 2016-05-18 |  |  |  |  |  |
| C-MEP-AC-1128 |  | Installation of Ductwork, Insulation & Dampers at level 7 | 23d | 2015-05-10 | 2015-06-04 | C-F-P-423 SS, C-MEP-AC-168, SD-CS-L7-312 | 116d | 0d | 140,612.08 | GEN |
| C-MEP-AC-1148 |  | Installation of Chilled Water Pipes & Valves at level 7 | 25d | 2015-06-18 | 2015-07-19 | C-MEP-AC-1128 SS+10d, C-MEP-AC-002 | 132d | 12d | 30,741.92 | GEN |
| C-MEP-AC-1178 |  | Pressure testing of Ductwork at level 7 | 8d | 2015-07-11 | 2015-07-21 | C-MEP-AC-1128, C-MEP-AC-698 | 114d | 0d |  | GEN |
| C-MEP-AC-1188 |  | Installation of HVAC equipments AHU's, FCU's, ERU's, VAV's, CAV's & Fans at level 7 | 25d | 2015-07-19 | 2015-08-16 | C-MEP-AC-1178 FF, C-MEP-AC-1168 FF, C-MEP-AC-1128 SS | 168d | 70d | 48,356.71 | GEN |
| C-MEP-AC-1168 |  | Pressure testing & Insulation of Chilled Water Pipes at level 7 | 12d | 2015-08-03 | 2015-08-16 | C-MEP-AC-1148, C-MEP-AC-688 | 120d | 0d | 8,821.1 | GEN |
| C-MEP-AC-1158 |  | Installation of Chilled Water Pipes Control Devices & Isolator at level 7 | 8d | 2015-09-16 | 2015-09-28 | C-MEP-AC-1168, C-MEP-AC-678 | 121d | 0d | 2,889.38 | GEN |
| C-MEP-AC-1138 |  | Installation of Silencers, Attenuators, Isolators & Detectors at level 7 | 12d | 2015-10-04 | 2015-10-17 | C-MEP-AC-1178, C-MEP-AC-658 SS | 138d | 0d | 28,274.51 | GEN |
| C-MEP-AC-1198 |  | Installation of Grilles, Diffusers & Controller at level 7 | 12d | 2016-05-05 | 2016-05-18 | C-MEP-AC-1188, C-F-CF-1017, C-F-CF-1007, C-F-WF-584 FF, C-F-CF-1007 FF, C-F-WF-574 FF, C-MEP-AC-238 | 165d | 28d | 55,880.87 | GEN |
|  | 3 | **Fire Fighting** |  | 2015-05-21 | 2016-03-26 |  |  |  |  |  |
| C-MEP-FF-564 |  | Installation of FIre fighting Pipes at level 7 | 25d | 2015-05-21 | 2015-06-18 | C-MEP-AC-1128 SS+10d, SD-CS-L7-332 | 160d | 10d | 45,406.88 | GEN |
| C-MEP-FF-584 |  | Pressure testing of fire fighting pipes at level 7 | 8d | 2015-07-27 | 2015-08-04 | C-MEP-FF-564, C-MEP-FF-344 | 130d | 0d | 5,280.67 | GEN |
| C-MEP-FF-574 |  | Installation of fire Fighting Valves at level 7 | 20d | 2015-10-18 | 2015-11-09 | C-MEP-FF-584, C-MEP-FF-334 SS | 98d | 0d | 18,427.34 | GEN |
| C-MEP-FF-594 |  | Installation of Fire Fighting Sprinklers & Fire hose Cabinets & Extinguishers at level 7 | 14d | 2016-03-10 | 2016-03-26 | C-MEP-FF-574, C-F-CF-1007, C-F-CF-997, C-MEP-FF-584, C-MEP-FF-354 SS | 116d | 0d | 64,097.37 | GEN |
|  | 4 | **Plumbing & Drainage** |  | 2015-06-08 | 2016-05-12 |  |  |  |  |  |
| C-MEP-PD-705 |  | Installation of Water Pipes & Valves (Hot & Cold atc..) at level 7 | 20d | 2015-06-08 | 2015-06-30 | C-MEP-FF-564 SS, C-F-P-433, SD-CS-L7-372 | 155d | 0d | 83,874.06 | GEN |
| C-MEP-PD-725 |  | Pressure testing & Insullation of water pipes at level 7 | 8d | 2015-07-21 | 2015-07-29 | C-MEP-PD-705, C-MEP-PD-425 | 159d | 0d | 9,573.63 | GEN |
| C-MEP-PD-715 |  | Installation drainage Pipes at level 7 | 25d | 2015-08-22 | 2015-09-19 | C-MEP-PD-705 SS, C-MEP-PD-415 SS | 131d | 0d | 30,204.4 | GEN |
| C-MEP-PD-735 |  | Pressure testing of drainage pipes at level 7 | 8d | 2015-10-12 | 2015-10-20 | C-MEP-PD-715, C-MEP-PD-435 SS | 115d | 0d | 1,651.42 | GEN |
| C-MEP-PD-745 |  | Installation of Outlets, Drains, Gullies, Cowls, & Clean out at level 7 | 20d | 2016-04-20 | 2016-05-12 | C-MEP-PD-725, C-MEP-PD-725 FF, C-F-FF-574, C-F-WF-574, C-F-FF-574 FF, C-F-WF-594, C-F-WF-574 FF, C-F-DW-574, C-MEP-PD-95, C-F-P-LSF-372 | 174d | 20d | 13,120.28 | GEN |
|  | 7 | **ELV systems** |  | 2015-07-11 | 2016-03-13 |  |  |  |  |  |
|  | 1 | **Room Management System** |  | 2015-07-19 | 2016-03-13 |  |  |  |  |  |
| C-ELV-RMS-745 |  | Installation of Cable Trays & Truncking at level 7 | 25d | 2015-07-19 | 2015-08-16 | C-ELV-CS-745 SS+5d | 132d | 0d | 2,769.38 |  |
| C-ELV-RMS-705 |  | Installation of RMS first fix (Conduits, Boxes within block work , Gypsum Boards & Raised FLooring at level 7 | 20d | 2015-08-16 | 2015-09-07 | C-F-P-433, C-F-P-423, SD-CS-L7-552, C-ELV-RMS-405 SS | 119d | 0d | 11,902.78 | GEN |
| C-ELV-RMS-715 |  | Installation of second fix (Cabling & Wirring etc..) at level 7 | 25d | 2015-09-08 | 2015-10-10 | C-ELV-RMS-705, C-ELV-RMS-745 | 119d | 0d | 11,902.78 | GEN |
| C-ELV-RMS-725 |  | Installation & Connection of ethernets & HVAC thermostates etc.. at level 7 | 25d | 2015-10-11 | 2015-11-08 | C-ELV-RMS-715 | 119d | 40d | 27,773.16 | GEN |
| C-ELV-RMS-735 |  | Installtion & Connection of Panels, Controller, switches, server etc..) at level 7 | 20d | 2016-02-20 | 2016-03-13 | C-ELV-RMS-725, C-ELV-RMS-435 SS | 175d | 0d | 27,773.16 |  |

Notes:
- C-MEP-AC-1128: Expenses: 1 140612
- C-MEP-AC-1148: Expenses: 1 30741.9
- C-MEP-AC-1188: Expenses: 1 48356.7
- C-MEP-AC-1168: Expenses: 1 8821.1
- C-MEP-AC-1158: Expenses: 1 2889.38
- C-MEP-AC-1138: Expenses: 1 28274.5
- C-MEP-AC-1198: Expenses: 1 55880.9
- C-MEP-FF-564: Expenses: 1 45406.9
- C-MEP-FF-584: Expenses: 1 5280.67
- C-MEP-FF-574: Expenses: 1 18427.3
- C-MEP-FF-594: Expenses: 1 64097.4
- C-MEP-PD-705: Expenses: 1 83874.1
- C-MEP-PD-725: Expenses: 1 9573.63
- C-MEP-PD-715: Expenses: 1 30204.4
- C-MEP-PD-735: Expenses: 1 1651.42
- C-MEP-PD-745: Expenses: 1 13120.3
- C-ELV-RMS-745: Expenses: 1 2769.38
- C-ELV-RMS-705: Expenses: 1 11902.8
- C-ELV-RMS-715: Expenses: 1 11902.8
- C-ELV-RMS-725: Expenses: 1 27773.2
- C-ELV-RMS-735: Expenses: 1 27773.2

| ID | WBS | Activity | Duration | Start | Finish | Predecessors | Total float | Free float | Cost | AREA |
| --- | --- | --- | --- | --- | --- | --- | --- | --- | --- | --- |
|  | 12 | **Fire Alarm & Detection System** |  | 2015-07-30 | 2016-02-17 |  |  |  |  |  |
| C-ELV-FA-745 |  | Installation of Cable Trays & Truncking at level 7 | 25d | 2015-07-30 | 2015-08-27 | C-ELV-MSPA-745 SS+5d, SD-CS-L7-592 | 132d | 0d | 2,769.38 |  |
| C-ELV-FA-705 |  | Installation of FA first Fix Conduits, Boxes within block work , Gypsum Boards & Raised FLooring at level 7 | 20d | 2015-08-16 | 2015-09-07 | C-F-P-433, C-F-P-423, C-ELV-FA-405 SS | 124d | 0d | 13,660.92 | GEN |
| C-ELV-FA-715 |  | Installation of second fix (Cabling & Wirring etc..) at level 7 | 20d | 2015-09-08 | 2015-10-04 | C-ELV-FA-705, C-ELV-FA-745 | 124d | 0d | 22,768.2 | GEN |
| C-ELV-FA-725 |  | Installation & Connection of heat detector, smoke detector, flame detector etc.. at level 7 | 25d | 2015-10-05 | 2015-11-02 | C-ELV-FA-715 | 124d | 45d | 27,321.84 | GEN |
| C-ELV-FA-735 |  | Installtion & Connection of Racks & Panels at level 7 | 20d | 2016-01-25 | 2016-02-17 | C-ELV-FA-725, C-ELV-FA-435 SS | 156d | 0d | 27,321.84 |  |
|  | 2 | **Music System & Public Address System** |  | 2015-07-25 | 2016-03-06 |  |  |  |  |  |
| C-ELV-MSPA-745 |  | Installation of Cable Trays & Truncking at level 7 | 25d | 2015-07-25 | 2015-08-22 | C-ELV-RMS-745 SS+5d | 132d | 0d | 2,769.38 |  |
| C-ELV-MSPA-705 |  | Installation of MS/PA first fix (Conduits, Boxes within block work, Gypsum Boards & Raised FLooring at level 7 | 20d | 2015-10-05 | 2015-10-27 | C-F-P-433, C-F-P-423, SD-CS-L7-572, C-ELV-MSPA-405 | 62d | 0d | 6,994.34 | GEN |
| C-ELV-MSPA-715 |  | Installation of second fix (Cabling & Wirring etc..) at level 7 | 25d | 2015-10-28 | 2015-11-25 | C-ELV-MSPA-705, C-ELV-MSPA-745 | 79d | 0d | 6,994.34 | GEN |
| C-ELV-MSPA-725 |  | Installation & Connection of speakers, Amplifier & Controller at level 7 | 25d | 2015-11-26 | 2015-12-26 | C-ELV-MSPA-715 | 79d | 0d | 16,320.12 | GEN |
| C-ELV-MSPA-735 |  | Installtion & Connection of Media hub, panels and processor at level 7 | 20d | 2016-02-13 | 2016-03-06 | C-ELV-MSPA-725, C-ELV-MSPA-435 | 201d | 0d | 16,320.12 |  |
|  | 3 | **IP CCTV & Access Control System** |  | 2015-07-23 | 2016-02-08 |  |  |  |  |  |
| C-ELV-CCTV-705 |  | Installation of CCTV first Fix Conduits, Boxes within block work, Gypsum Boards & Raised FLooring at level 7 | 20d | 2015-07-23 | 2015-08-15 | C-F-P-433, C-F-P-423, SD-CS-L7-612, C-ELV-CCTV-405 SS | 137d | 0d | 8,161.35 | GEN |
| C-ELV-CCTV-745 |  | Installation of Cable Trays & Truncking at level 7 | 25d | 2015-08-05 | 2015-09-02 | C-ELV-FA-745 SS+5d | 132d | 0d | 2,769.38 |  |
| C-ELV-CCTV-715 |  | Installation of second fix (Cabling & Wirring etc..) at level 7 | 20d | 2015-09-03 | 2015-09-29 | C-ELV-CCTV-705, C-ELV-CCTV-745 | 135d | 0d | 19,043.14 | GEN |
| C-ELV-CCTV-725 |  | Installation & Connection of Camera's & Alarms at level 7 | 18d | 2015-09-30 | 2015-10-20 | C-ELV-CCTV-715 | 135d | 56d | 183,698.91 | GEN |
| C-ELV-CCTV-735 |  | Installtion & Connection of Racks, Panels etc... at level 7 | 25d | 2016-01-11 | 2016-02-08 | C-ELV-CCTV-725 FF, C-ELV-CCTV-435 SS | 123d | 0d | 7,322.52 |  |
|  | 7 | **Communication System** |  | 2015-07-11 | 2016-02-21 |  |  |  |  |  |
| C-ELV-CS-745 |  | Installation of Cable Trays & Truncking at level 7 | 18d | 2015-07-11 | 2015-08-02 | C-MEP-E-896 SS, C-ELV-CS-445 SS | 132d | 0d | 2,769.38 |  |
| C-ELV-CS-705 |  | Installation of CS first fix (Conduits, Boxes within block work, Gypsum Boards & Raised FLooring at level 7 | 20d | 2015-07-23 | 2015-08-15 | C-F-P-433, C-F-P-423, SD-CS-L7-532, C-ELV-CS-405 | 125d | 0d | 27,356.12 | GEN |
| C-ELV-CS-715 |  | Installation of second fix (Cabling & Wirring etc..) at level 7 | 25d | 2015-08-16 | 2015-09-13 | C-ELV-CS-705, C-ELV-CS-745 | 139d | 0d | 82,068.35 | GEN |
| C-ELV-CS-725 |  | Installation & Connection of Wireless Access points & IP dect phone & RJ 45 at level 7 | 25d | 2015-09-14 | 2015-10-15 | C-ELV-CS-715 | 139d | 60d | 93,342.54 | GEN |
| C-ELV-CS-735 |  | Installtion & Connection of Controller & Instrumentation at level 7 | 20d | 2016-01-28 | 2016-02-21 | C-ELV-CS-725, C-ELV-CS-435 | 125d | 0d | 223,314.69 |  |

Notes:
- C-ELV-FA-745: Expenses: 1 2769.38
- C-ELV-FA-705: Expenses: 1 13660.9
- C-ELV-FA-715: Expenses: 1 22768.2
- C-ELV-FA-725: Expenses: 1 27321.8
- C-ELV-FA-735: Expenses: 1 27321.8
- C-ELV-MSPA-745: Expenses: 1 2769.38
- C-ELV-MSPA-705: Expenses: 1 6994.34
- C-ELV-MSPA-715: Expenses: 1 6994.34
- C-ELV-MSPA-725: Expenses: 1 16320.1
- C-ELV-MSPA-735: Expenses: 1 16320.1
- C-ELV-CCTV-705: Expenses: 1 8161.35
- C-ELV-CCTV-745: Expenses: 1 2769.38
- C-ELV-CCTV-715: Expenses: 1 19043.1
- C-ELV-CCTV-725: Expenses: 1 183699
- C-ELV-CCTV-735: Expenses: 1 7322.52
- C-ELV-CS-745: Expenses: 1 2769.38
- C-ELV-CS-705: Expenses: 1 27356.1
- C-ELV-CS-715: Expenses: 1 82068.4
- C-ELV-CS-725: Expenses: 1 93342.5
- C-ELV-CS-735: Expenses: 1 223315

| ID | WBS | Activity | Duration | Start | Finish | Predecessors | Total float | Free float | Cost | AREA |
| --- | --- | --- | --- | --- | --- | --- | --- | --- | --- | --- |
|  | 4 | **IP, SMATV & QAM Television System** |  | 2015-08-11 | 2016-01-11 |  |  |  |  |  |
| C-ELV-SMATV-745 |  | Installation of Cable Trays & Truncking at level 7 | 25d | 2015-08-11 | 2015-09-08 | C-ELV-CCTV-745 SS+5d | 132d | 0d | 2,769.38 |  |
| C-ELV-SMATV-705 |  | Installation of SMATV first Fix Conduits, Boxes within block work , Gypsum Boards & Raised FLooring at level 7 | 20d | 2015-08-16 | 2015-09-07 | C-F-P-433, C-F-P-423, SD-CS-L7-632, C-ELV-SMATV-405 SS | 135d | 0d | 4,452.18 | GEN |
| C-ELV-SMATV-715 |  | Installation of second fix (Cabling & Wirring etc..) at level 7 | 16d | 2015-09-09 | 2015-09-30 | C-ELV-SMATV-705, C-ELV-SMATV-745 | 134d | 0d | 10,388.41 | GEN |
| C-ELV-SMATV-725 |  | Installation & Connection of Outlets, switches and splitter at level 7 | 18d | 2015-10-01 | 2015-10-21 | C-ELV-SMATV-715 | 134d | 49d | 6,537.45 | GEN |
| C-ELV-SMATV-735 |  | Installtion & Connection of SMATV & QAM fiber & receiver at level 7 | 20d | 2015-12-20 | 2016-01-11 | C-ELV-SMATV-725, C-ELV-SMATV-435 SS | 167d | 0d | 2,419.21 |  |
|  | 5 | **BMS system** |  | 2015-08-16 | 2016-02-11 |  |  |  |  |  |
| C-MEP-BMS-705 |  | Installation of BMS first Fix Conduits, Boxes within block work , Gypsum Boards & Raised FLooring at level 7 | 20d | 2015-08-16 | 2015-09-07 | C-F-P-433, C-F-P-423, SD-CS-L7-512, C-MEP-BMS-405 SS | 119d | 0d | 8,895.95 | GEN |
| C-MEP-BMS-745 |  | Installation of Cable trays & Trunking at level 7 | 20d | 2015-08-17 | 2015-09-08 | C-ELV-SMATV-745 SS+5d | 132d | 0d |  |  |
| C-MEP-BMS-715 |  | Installation of BMS Cabling & Wirring at level 7 | 16d | 2015-09-09 | 2015-09-30 | C-MEP-BMS-705, C-MEP-BMS-745 | 132d | 34d | 11,861.27 | GEN |
| C-MEP-BMS-725 |  | Installation & Connection of BMS Sensors, Relays, & Valves at level 7 | 20d | 2015-11-10 | 2015-12-02 | C-MEP-BMS-715, C-MEP-PD-735, C-MEP-PD-725, C-MEP-FF-574, C-MEP-AC-1188, C-MEP-AC-1168, C-MEP-AC-1178 | 98d | 19d | 14,826.58 | GEN |
| C-MEP-BMS-735 |  | Installtion & Connection of BMS Racks, Panels etc... at level 7 | 20d | 2016-01-19 | 2016-02-11 | C-MEP-BMS-725, C-MEP-BMS-435 SS | 191d | 0d | 14,826.58 |  |
|  | 22 | **MEP - Level 8** |  | 2015-05-18 | 2016-08-17 |  |  |  |  |  |
|  | 1 | **Electrical** |  | 2015-06-03 | 2016-08-17 |  |  |  |  |  |
| C-MEP-E-546 |  | Installation of first Electrical Fix Conduits, Boxes within block work & Gypsum Boards at level 8 | 20d | 2015-06-03 | 2015-06-25 | C-F-P-273, C-MEP-E-66 | 178d | 14d | 55,235.7 | GEN |
| C-MEP-E-596 |  | Installation of Cable Trays & Truncking at level 8 | 18d | 2015-06-22 | 2015-07-12 | C-MEP-FF-364 SS+10d, C-MEP-PD-455 SS+5d, C-MEP-E-116 | 156d | 0d | 21,017.55 |  |
| C-MEP-E-556 |  | Installation of Electrical Second Fix (Cabling & Wirring etc..). at level 8 | 18d | 2015-07-13 | 2015-08-04 | C-MEP-E-546, C-MEP-E-596, C-MEP-E-76 | 174d | 0d | 190,528.33 | GEN |
| C-MEP-E-566 |  | Installation & Connection of Electrical DB's, SMDB's at level 8 | 16d | 2015-08-05 | 2015-08-23 | C-MEP-E-556, C-MEP-E-206 SS | 200d | 28d | 78,921.15 | GEN |
| C-MEP-E-586 |  | Installation & Connection of Lighting Fixtures & Sockets at level 8 | 14d | 2016-08-02 | 2016-08-17 | C-MEP-E-556, C-F-CF-667, C-F-CF-657, C-F-WF-374, C-F-WF-384, C-MEP-E-286, C-F-P-LSF-382 FF | 114d | 0d | 71,857.69 | GEN |
|  | 2 | **HVAC** |  | 2015-05-18 | 2016-06-11 |  |  |  |  |  |
| C-MEP-AC-728 |  | Installation of Ductwork, Insulation & Dampers at level 8 | 23d | 2015-05-18 | 2015-06-13 | C-F-P-273 SS, C-MEP-AC-328, SD-CS-L8-332 | 132d | 0d | 140,612.08 | GEN |
| C-MEP-AC-748 |  | Installation of Chilled Water Pipes & Valves at level 8 | 25d | 2015-06-18 | 2015-07-19 | C-MEP-AC-728 SS+10d, C-MEP-AC-268 SS | 144d | 24d | 30,741.92 | GEN |
| C-MEP-AC-778 |  | Pressure testing of Ductwork at level 8 | 8d | 2015-07-22 | 2015-07-30 | C-MEP-AC-728, C-MEP-AC-1178 | 114d | 0d |  | GEN |
| C-MEP-AC-788 |  | Installation of HVAC equipments AHU's, FCU's, ERU's, VAV's, CAV's & Fans at level 8 | 25d | 2015-08-02 | 2015-08-30 | C-MEP-AC-778 FF, C-MEP-AC-768 FF, C-MEP-AC-728 SS | 164d | 58d | 51,199.71 | GEN |
| C-MEP-AC-768 |  | Pressure testing & Insulation of Chilled Water Pipes at level 8 | 12d | 2015-08-17 | 2015-08-30 | C-MEP-AC-748, C-MEP-AC-1168 | 120d | 0d | 8,821.1 | GEN |
| C-MEP-AC-758 |  | Installation of Chilled Water Pipes Control Devices & Isolator at level 8 | 8d | 2015-09-29 | 2015-10-07 | C-MEP-AC-768, C-MEP-AC-1158 | 121d | 0d | 2,889.38 | GEN |
| C-MEP-AC-738 |  | Installation of Silencers, Attenuators, Isolators & Detectors at level 8 | 12d | 2015-10-04 | 2015-10-17 | C-MEP-AC-778, C-MEP-AC-1138 SS | 146d | 0d | 28,274.51 | GEN |
| C-MEP-AC-798 |  | Installation of Grilles, Diffusers & Controller at level 8 | 12d | 2016-05-29 | 2016-06-11 | C-MEP-AC-788, C-F-CF-667, C-F-CF-657, C-F-WF-384 FF, C-F-CF-657 FF, C-F-WF-374 FF, C-MEP-AC-398 | 145d | 8d | 55,880.87 | GEN |

Notes:
- C-ELV-SMATV-745: Expenses: 1 2769.38
- C-ELV-SMATV-705: Expenses: 1 4452.18
- C-ELV-SMATV-715: Expenses: 1 10388.4
- C-ELV-SMATV-725: Expenses: 1 6537.45
- C-ELV-SMATV-735: Expenses: 1 2419.21
- C-MEP-BMS-705: Expenses: 1 8895.95
- C-MEP-BMS-715: Expenses: 1 11861.3
- C-MEP-BMS-725: Expenses: 1 14826.6
- C-MEP-BMS-735: Expenses: 1 14826.6
- C-MEP-E-546: Expenses: 1 55235.7
- C-MEP-E-596: Expenses: 1 21017.5
- C-MEP-E-556: Expenses: 1 57962.7; 2 132566
- C-MEP-E-566: Expenses: 1 78921.1
- C-MEP-E-586: Expenses: 1 71857.7
- C-MEP-AC-728: Expenses: 1 140612
- C-MEP-AC-748: Expenses: 1 30741.9
- C-MEP-AC-788: Expenses: 1 51199.7
- C-MEP-AC-768: Expenses: 1 8821.1
- C-MEP-AC-758: Expenses: 1 2889.38
- C-MEP-AC-738: Expenses: 1 28274.5
- C-MEP-AC-798: Expenses: 1 55880.9

| ID | WBS | Activity | Duration | Start | Finish | Predecessors | Total float | Free float | Cost | AREA |
| --- | --- | --- | --- | --- | --- | --- | --- | --- | --- | --- |
|  | 3 | **Fire Fighting** |  | 2015-05-30 | 2016-03-26 |  |  |  |  |  |
| C-MEP-FF-364 |  | Installation of FIre fighting Pipes at level 8 | 25d | 2015-05-30 | 2015-06-27 | C-MEP-AC-728 SS+10d, SD-CS-L8-352 | 161d | 10d | 45,406.88 | GEN |
| C-MEP-FF-384 |  | Pressure testing of fire fighting pipes at level 8 | 8d | 2015-08-05 | 2015-08-13 | C-MEP-FF-364, C-MEP-FF-584 | 130d | 0d | 5,280.67 | GEN |
| C-MEP-FF-374 |  | Installation of fire Fighting Valves at level 8 | 20d | 2015-10-18 | 2015-11-09 | C-MEP-FF-384, C-MEP-FF-574 SS | 106d | 0d | 18,427.34 | GEN |
| C-MEP-FF-394 |  | Installation of Fire Fighting Sprinklers & Fire hose Cabinets & Extinguishers at level 8 | 14d | 2016-03-10 | 2016-03-26 | C-MEP-FF-374, C-F-CF-657, C-F-CF-647, C-MEP-FF-384, C-MEP-FF-594 SS | 116d | 0d | 64,097.37 | GEN |
|  | 4 | **Plumbing & Drainage** |  | 2015-06-16 | 2016-06-05 |  |  |  |  |  |
| C-MEP-PD-455 |  | Installation of Water Pipes & Valves (Hot & Cold atc..) at level 8 | 20d | 2015-06-16 | 2015-07-08 | C-MEP-FF-364 SS, C-F-P-283, SD-CS-L8-392 | 156d | 0d | 83,874.06 | GEN |
| C-MEP-PD-475 |  | Pressure testing & Insullation of water pipes at level 8 | 8d | 2015-07-30 | 2015-08-08 | C-MEP-PD-455, C-MEP-PD-725 | 159d | 0d | 9,573.63 | GEN |
| C-MEP-PD-465 |  | Installation drainage Pipes at level 8 | 25d | 2015-08-22 | 2015-09-19 | C-MEP-PD-455 SS, C-MEP-PD-715 SS | 139d | 0d | 30,204.4 | GEN |
| C-MEP-PD-485 |  | Pressure testing of drainage pipes at level 8 | 8d | 2015-10-12 | 2015-10-20 | C-MEP-PD-465, C-MEP-PD-735 SS | 123d | 0d | 1,651.42 | GEN |
| C-MEP-PD-495 |  | Installation of Outlets, Drains, Gullies, Cowls, & Clean out at level 8 | 20d | 2016-05-14 | 2016-06-05 | C-MEP-PD-475, C-MEP-PD-475 FF, C-F-FF-374, C-F-WF-374, C-F-FF-374 FF, C-F-WF-394, C-F-WF-374 FF, C-F-DW-374, C-MEP-PD-145, C-F-P-LSF-382 FF | 144d | 0d | 13,120.28 | GEN |
|  | 7 | **ELV systems** |  | 2015-07-11 | 2016-03-29 |  |  |  |  |  |
|  | 1 | **Room Management System** |  | 2015-07-19 | 2016-03-13 |  |  |  |  |  |
| C-ELV-RMS-495 |  | Installation of Cable Trays & Truncking at level 8 | 25d | 2015-07-19 | 2015-08-16 | C-ELV-CS-495 SS+5d | 140d | 0d | 2,769.38 |  |
| C-ELV-RMS-455 |  | Installation of RMS first fix (Conduits, Boxes within block work , Gypsum Boards & Raised FLooring at level 8 | 20d | 2015-08-16 | 2015-09-07 | C-F-P-283, C-F-P-273, SD-CS-L8-572, C-ELV-RMS-705 SS | 123d | 0d | 11,902.78 | GEN |
| C-ELV-RMS-465 |  | Installation of second fix (Cabling & Wirring etc..) at level 8 | 25d | 2015-09-08 | 2015-10-10 | C-ELV-RMS-455, C-ELV-RMS-495 | 127d | 0d | 11,902.78 | GEN |
| C-ELV-RMS-475 |  | Installation & Connection of ethernets & HVAC thermostates etc.. at level 8 | 25d | 2015-10-11 | 2015-11-08 | C-ELV-RMS-465 | 127d | 60d | 27,773.16 | GEN |
| C-ELV-RMS-485 |  | Installtion & Connection of Panels, Controller, switches, server etc..) at level 8 | 20d | 2016-02-20 | 2016-03-13 | C-ELV-RMS-475, C-ELV-RMS-735 SS | 175d | 0d | 27,773.16 |  |
|  | 12 | **Fire Alarm & Detection System** |  | 2015-07-30 | 2016-03-12 |  |  |  |  |  |
| C-ELV-FA-495 |  | Installation of Cable Trays & Truncking at level 8 | 25d | 2015-07-30 | 2015-08-27 | C-ELV-MSPA-495 SS+5d, SD-CS-L8-612 | 140d | 0d | 2,769.38 |  |
| C-ELV-FA-455 |  | Installation of FA first Fix Conduits, Boxes within block work , Gypsum Boards & Raised FLooring at level 8 | 20d | 2015-08-16 | 2015-09-07 | C-F-P-283, C-F-P-273, C-ELV-FA-705 SS | 125d | 0d | 13,660.92 | GEN |
| C-ELV-FA-465 |  | Installation of second fix (Cabling & Wirring etc..) at level 8 | 20d | 2015-09-08 | 2015-10-04 | C-ELV-FA-455, C-ELV-FA-495 | 132d | 0d | 22,768.2 | GEN |
| C-ELV-FA-475 |  | Installation & Connection of heat detector, smoke detector, flame detector etc.. at level 8 | 25d | 2015-10-05 | 2015-11-02 | C-ELV-FA-465 | 132d | 65d | 27,321.84 | GEN |
| C-ELV-FA-485 |  | Installtion & Connection of Racks & Panels at level 8 | 20d | 2016-02-18 | 2016-03-12 | C-ELV-FA-475, C-ELV-FA-735 | 156d | 0d | 27,321.84 |  |

Notes:
- C-MEP-FF-364: Expenses: 1 45406.9
- C-MEP-FF-384: Expenses: 1 5280.67
- C-MEP-FF-374: Expenses: 1 18427.3
- C-MEP-FF-394: Expenses: 1 64097.4
- C-MEP-PD-455: Expenses: 1 83874.1
- C-MEP-PD-475: Expenses: 1 9573.63
- C-MEP-PD-465: Expenses: 1 30204.4
- C-MEP-PD-485: Expenses: 1 1651.42
- C-MEP-PD-495: Expenses: 1 13120.3
- C-ELV-RMS-495: Expenses: 1 2769.38
- C-ELV-RMS-455: Expenses: 1 11902.8
- C-ELV-RMS-465: Expenses: 1 11902.8
- C-ELV-RMS-475: Expenses: 1 27773.2
- C-ELV-RMS-485: Expenses: 1 27773.2
- C-ELV-FA-495: Expenses: 1 2769.38
- C-ELV-FA-455: Expenses: 1 13660.9
- C-ELV-FA-465: Expenses: 1 22768.2
- C-ELV-FA-475: Expenses: 1 27321.8
- C-ELV-FA-485: Expenses: 1 27321.8

| ID | WBS | Activity | Duration | Start | Finish | Predecessors | Total float | Free float | Cost | AREA |
| --- | --- | --- | --- | --- | --- | --- | --- | --- | --- | --- |
|  | 2 | **Music System & Public Address System** |  | 2015-07-25 | 2016-03-29 |  |  |  |  |  |
| C-ELV-MSPA-495 |  | Installation of Cable Trays & Truncking at level 8 | 25d | 2015-07-25 | 2015-08-22 | C-ELV-RMS-495 SS+5d | 140d | 0d | 2,769.38 |  |
| C-ELV-MSPA-455 |  | Installation of MS/PA first fix (Conduits, Boxes within block work, Gypsum Boards & Raised FLooring at level 8 | 20d | 2015-10-28 | 2015-11-19 | C-F-P-283, C-F-P-273, SD-CS-L8-592, C-ELV-MSPA-705 | 62d | 0d | 6,994.34 | GEN |
| C-ELV-MSPA-465 |  | Installation of second fix (Cabling & Wirring etc..) at level 8 | 25d | 2015-11-21 | 2015-12-20 | C-ELV-MSPA-455, C-ELV-MSPA-495 | 67d | 0d | 6,994.34 | GEN |
| C-ELV-MSPA-475 |  | Installation & Connection of speakers, Amplifier & Controller at level 8 | 25d | 2015-12-21 | 2016-01-18 | C-ELV-MSPA-465 | 67d | 0d | 16,320.12 | GEN |
| C-ELV-MSPA-485 |  | Installtion & Connection of Media hub, panels and processor at level 8 | 20d | 2016-03-07 | 2016-03-29 | C-ELV-MSPA-475, C-ELV-MSPA-735 | 201d | 0d | 16,320.12 |  |
|  | 3 | **IP CCTV & Access Control System** |  | 2015-07-23 | 2016-02-08 |  |  |  |  |  |
| C-ELV-CCTV-455 |  | Installation of CCTV first Fix Conduits, Boxes within block work, Gypsum Boards & Raised FLooring at level 8 | 20d | 2015-07-23 | 2015-08-15 | C-F-P-283, C-F-P-273, SD-CS-L8-632, C-ELV-CCTV-705 SS | 137d | 0d | 8,161.35 | GEN |
| C-ELV-CCTV-495 |  | Installation of Cable Trays & Truncking at level 8 | 25d | 2015-08-05 | 2015-09-02 | C-ELV-FA-495 SS+5d | 140d | 0d | 2,769.38 |  |
| C-ELV-CCTV-465 |  | Installation of second fix (Cabling & Wirring etc..) at level 8 | 20d | 2015-09-03 | 2015-09-29 | C-ELV-CCTV-455, C-ELV-CCTV-495 | 143d | 0d | 19,043.14 | GEN |
| C-ELV-CCTV-475 |  | Installation & Connection of Camera's & Alarms at level 8 | 18d | 2015-09-30 | 2015-10-20 | C-ELV-CCTV-465 | 143d | 76d | 183,698.91 | GEN |
| C-ELV-CCTV-485 |  | Installtion & Connection of Racks, Panels etc... at level 8 | 25d | 2016-01-11 | 2016-02-08 | C-ELV-CCTV-475 FF, C-ELV-CCTV-735 SS | 123d | 0d | 7,322.52 |  |
|  | 7 | **Communication System** |  | 2015-07-11 | 2016-03-15 |  |  |  |  |  |
| C-ELV-CS-495 |  | Installation of Cable Trays & Truncking at level 8 | 18d | 2015-07-11 | 2015-08-02 | C-MEP-E-596 SS, C-ELV-CS-745 SS | 140d | 0d | 2,769.38 |  |
| C-ELV-CS-455 |  | Installation of CS first fix (Conduits, Boxes within block work, Gypsum Boards & Raised FLooring at level 8 | 20d | 2015-07-23 | 2015-08-15 | C-F-P-283, C-F-P-273, SD-CS-L8-552, C-ELV-CS-705 SS | 125d | 0d | 27,356.12 | GEN |
| C-ELV-CS-465 |  | Installation of second fix (Cabling & Wirring etc..) at level 8 | 25d | 2015-08-16 | 2015-09-13 | C-ELV-CS-455, C-ELV-CS-495 | 147d | 0d | 82,068.35 | GEN |
| C-ELV-CS-475 |  | Installation & Connection of Wireless Access points & IP dect phone & RJ 45 at level 8 | 25d | 2015-09-14 | 2015-10-15 | C-ELV-CS-465 | 147d | 80d | 93,342.54 | GEN |
| C-ELV-CS-485 |  | Installtion & Connection of Controller & Instrumentation at level 8 | 20d | 2016-02-22 | 2016-03-15 | C-ELV-CS-475, C-ELV-CS-735 | 125d | 0d | 223,314.69 |  |
|  | 4 | **IP, SMATV & QAM Television System** |  | 2015-08-11 | 2016-01-11 |  |  |  |  |  |
| C-ELV-SMATV-495 |  | Installation of Cable Trays & Truncking at level 8 | 25d | 2015-08-11 | 2015-09-08 | C-ELV-CCTV-495 SS+5d | 140d | 0d | 2,769.38 |  |
| C-ELV-SMATV-455 |  | Installation of SMATV first Fix Conduits, Boxes within block work , Gypsum Boards & Raised FLooring at level 8 | 20d | 2015-08-16 | 2015-09-07 | C-F-P-283, C-F-P-273, SD-CS-L8-652, C-ELV-SMATV-705 SS | 136d | 0d | 4,452.18 | GEN |
| C-ELV-SMATV-465 |  | Installation of second fix (Cabling & Wirring etc..) at level 8 | 16d | 2015-09-09 | 2015-09-30 | C-ELV-SMATV-455, C-ELV-SMATV-495 | 142d | 0d | 10,388.41 | GEN |
| C-ELV-SMATV-475 |  | Installation & Connection of Outlets, switches and splitter at level 8 | 18d | 2015-10-01 | 2015-10-21 | C-ELV-SMATV-465 | 142d | 49d | 6,537.45 | GEN |
| C-ELV-SMATV-485 |  | Installtion & Connection of SMATV & QAM fiber & receiver at level 8 | 20d | 2015-12-20 | 2016-01-11 | C-ELV-SMATV-475, C-ELV-SMATV-735 SS | 167d | 0d | 2,419.21 |  |

Notes:
- C-ELV-MSPA-495: Expenses: 1 2769.38
- C-ELV-MSPA-455: Expenses: 1 6994.34
- C-ELV-MSPA-465: Expenses: 1 6994.34
- C-ELV-MSPA-475: Expenses: 1 16320.1
- C-ELV-MSPA-485: Expenses: 1 16320.1
- C-ELV-CCTV-455: Expenses: 1 8161.35
- C-ELV-CCTV-495: Expenses: 1 2769.38
- C-ELV-CCTV-465: Expenses: 1 19043.1
- C-ELV-CCTV-475: Expenses: 1 183699
- C-ELV-CCTV-485: Expenses: 1 7322.52
- C-ELV-CS-495: Expenses: 1 2769.38
- C-ELV-CS-455: Expenses: 1 27356.1
- C-ELV-CS-465: Expenses: 1 82068.4
- C-ELV-CS-475: Expenses: 1 93342.5
- C-ELV-CS-485: Expenses: 1 223315
- C-ELV-SMATV-495: Expenses: 1 2769.38
- C-ELV-SMATV-455: Expenses: 1 4452.18
- C-ELV-SMATV-465: Expenses: 1 10388.4
- C-ELV-SMATV-475: Expenses: 1 6537.45
- C-ELV-SMATV-485: Expenses: 1 2419.21

| ID | WBS | Activity | Duration | Start | Finish | Predecessors | Total float | Free float | Cost | AREA |
| --- | --- | --- | --- | --- | --- | --- | --- | --- | --- | --- |
|  | 5 | **BMS system** |  | 2015-08-16 | 2016-02-11 |  |  |  |  |  |
| C-MEP-BMS-455 |  | Installation of BMS first Fix Conduits, Boxes within block work , Gypsum Boards & Raised FLooring at level 8 | 20d | 2015-08-16 | 2015-09-07 | C-F-P-283, C-F-P-273, SD-CS-L8-532, C-MEP-BMS-705 SS | 119d | 0d | 8,895.95 | GEN |
| C-MEP-BMS-495 |  | Installation of Cable trays & Trunking at level 8 | 20d | 2015-08-17 | 2015-09-08 | C-ELV-SMATV-495 SS+5d | 140d | 0d |  |  |
| C-MEP-BMS-465 |  | Installation of BMS Cabling & Wirring at level 8 | 16d | 2015-09-09 | 2015-09-30 | C-MEP-BMS-455, C-MEP-BMS-495 | 140d | 34d | 11,861.27 | GEN |
| C-MEP-BMS-475 |  | Installation & Connection of BMS Sensors, Relays, & Valves at level 8 | 20d | 2015-11-10 | 2015-12-02 | C-MEP-BMS-465, C-MEP-PD-485, C-MEP-PD-475, C-MEP-FF-374, C-MEP-AC-788, C-MEP-AC-768, C-MEP-AC-778 | 106d | 39d | 14,826.58 | GEN |
| C-MEP-BMS-485 |  | Installtion & Connection of BMS Racks, Panels etc... at level 8 | 20d | 2016-01-19 | 2016-02-11 | C-MEP-BMS-475, C-MEP-BMS-735 SS | 191d | 0d | 14,826.58 |  |
|  | 21 | **MEP - Level 9** |  | 2015-05-26 | 2016-09-03 |  |  |  |  |  |
|  | 1 | **Electrical** |  | 2015-06-15 | 2016-09-03 |  |  |  |  |  |
| C-MEP-E-606 |  | Installation of first Electrical Fix Conduits, Boxes within block work & Gypsum Boards at level 9 | 20d | 2015-06-15 | 2015-07-07 | C-F-P-303, C-MEP-E-126 | 110d | 11d | 55,235.7 | GEN |
| C-MEP-E-656 |  | Installation of Cable Trays & Truncking at level 9 | 18d | 2015-06-30 | 2015-07-22 | C-MEP-FF-404 SS+10d, C-MEP-PD-505 SS+5d, C-MEP-E-176 | 99d | 0d | 21,017.55 |  |
| C-MEP-E-616 |  | Installation of Electrical Second Fix (Cabling & Wirring etc..). at level 9 | 18d | 2015-07-23 | 2015-08-12 | C-MEP-E-606, C-MEP-E-656, C-MEP-E-136 | 99d | 3d | 190,528.33 | GEN |
| C-MEP-E-626 |  | Installation & Connection of Electrical DB's, SMDB's at level 9 | 16d | 2015-08-17 | 2015-09-03 | C-MEP-E-616, C-MEP-E-326 SS | 96d | 16d | 78,921.15 | GEN |
| C-MEP-E-646 |  | Installation & Connection of Lighting Fixtures & Sockets at level 9 | 14d | 2016-08-18 | 2016-09-03 | C-MEP-E-616, C-F-CF-737, C-F-CF-727, C-F-WF-414, C-F-WF-424, C-MEP-E-005, C-F-P-LSF-392 | 100d | 0d | 71,857.69 | GEN |
|  | 2 | **HVAC** |  | 2015-05-26 | 2016-06-11 |  |  |  |  |  |
| C-MEP-AC-808 |  | Installation of Ductwork, Insulation & Dampers at level 9 | 23d | 2015-05-26 | 2015-06-21 | C-F-P-303 SS, C-MEP-AC-001 SS, SD-CS-L9-352 | 109d | 0d | 140,612.08 | GEN |
| C-MEP-AC-828 |  | Installation of Chilled Water Pipes & Valves at level 9 | 25d | 2015-06-07 | 2015-07-05 | C-MEP-AC-808 SS+10d, C-MEP-AC-108 | 166d | 40d | 30,741.92 | GEN |
| C-MEP-AC-858 |  | Pressure testing of Ductwork at level 9 | 8d | 2015-08-01 | 2015-08-09 | C-MEP-AC-808, C-MEP-AC-778 | 114d | 0d |  | GEN |
| C-MEP-AC-868 |  | Installation of HVAC equipments AHU's, FCU's, ERU's, VAV's, CAV's & Fans at level 9 | 25d | 2015-08-16 | 2015-09-13 | C-MEP-AC-858 FF, C-MEP-AC-848 FF, C-MEP-AC-808 SS | 161d | 46d | 52,730.56 | GEN |
| C-MEP-AC-848 |  | Pressure testing & Insulation of Chilled Water Pipes at level 9 | 12d | 2015-08-31 | 2015-09-13 | C-MEP-AC-828, C-MEP-AC-768 | 120d | 0d | 8,821.1 | GEN |
| C-MEP-AC-818 |  | Installation of Silencers, Attenuators, Isolators & Detectors at level 9 | 12d | 2015-10-04 | 2015-10-17 | C-MEP-AC-858, C-MEP-AC-738 SS | 155d | 0d | 28,274.51 | GEN |
| C-MEP-AC-838 |  | Installation of Chilled Water Pipes Control Devices & Isolator at level 9 | 8d | 2015-10-08 | 2015-10-17 | C-MEP-AC-848, C-MEP-AC-758 | 121d | 0d | 2,889.38 | GEN |
| C-MEP-AC-878 |  | Installation of Grilles, Diffusers & Controller at level 9 | 12d | 2016-05-29 | 2016-06-11 | C-MEP-AC-868, C-F-CF-737, C-F-CF-727, C-F-WF-424 FF, C-F-CF-727 FF, C-F-WF-414 FF, C-MEP-AC-008 | 145d | 8d | 55,880.87 | GEN |
|  | 3 | **Fire Fighting** |  | 2015-06-07 | 2016-04-11 |  |  |  |  |  |
| C-MEP-FF-404 |  | Installation of FIre fighting Pipes at level 9 | 25d | 2015-06-07 | 2015-07-05 | C-MEP-AC-808 SS+10d, SD-CS-L9-372 | 109d | 10d | 45,406.88 | GEN |
| C-MEP-FF-424 |  | Pressure testing of fire fighting pipes at level 9 | 8d | 2015-08-15 | 2015-08-23 | C-MEP-FF-404, C-MEP-FF-384 | 130d | 0d | 5,280.67 | GEN |
| C-MEP-FF-414 |  | Installation of fire Fighting Valves at level 9 | 20d | 2015-10-18 | 2015-11-09 | C-MEP-FF-424, C-MEP-FF-374 SS | 115d | 0d | 18,427.34 | GEN |
| C-MEP-FF-434 |  | Installation of Fire Fighting Sprinklers & Fire hose Cabinets & Extinguishers at level 9 | 14d | 2016-03-27 | 2016-04-11 | C-MEP-FF-414, C-F-CF-727, C-F-CF-717, C-MEP-FF-424, C-MEP-FF-394 | 116d | 0d | 64,097.37 | GEN |

Notes:
- C-MEP-BMS-455: Expenses: 1 8895.95
- C-MEP-BMS-465: Expenses: 1 11861.3
- C-MEP-BMS-475: Expenses: 1 14826.6
- C-MEP-BMS-485: Expenses: 1 14826.6
- C-MEP-E-606: Expenses: 1 55235.7
- C-MEP-E-656: Expenses: 1 21017.5
- C-MEP-E-616: Expenses: 1 57962.7; 2 132566
- C-MEP-E-626: Expenses: 1 78921.1
- C-MEP-E-646: Expenses: 1 71857.7
- C-MEP-AC-808: Expenses: 1 140612
- C-MEP-AC-828: Expenses: 1 30741.9
- C-MEP-AC-868: Expenses: 1 52730.6
- C-MEP-AC-848: Expenses: 1 8821.1
- C-MEP-AC-818: Expenses: 1 28274.5
- C-MEP-AC-838: Expenses: 1 2889.38
- C-MEP-AC-878: Expenses: 1 55880.9
- C-MEP-FF-404: Expenses: 1 45406.9
- C-MEP-FF-424: Expenses: 1 5280.67
- C-MEP-FF-414: Expenses: 1 18427.3
- C-MEP-FF-434: Expenses: 1 64097.4

| ID | WBS | Activity | Duration | Start | Finish | Predecessors | Total float | Free float | Cost | AREA |
| --- | --- | --- | --- | --- | --- | --- | --- | --- | --- | --- |
|  | 4 | **Plumbing & Drainage** |  | 2015-06-24 | 2016-06-05 |  |  |  |  |  |
| C-MEP-PD-505 |  | Installation of Water Pipes & Valves (Hot & Cold atc..) at level 9 | 20d | 2015-06-24 | 2015-07-19 | C-MEP-FF-404 SS, C-F-P-313, SD-CS-L9-412 | 99d | 0d | 83,874.06 | GEN |
| C-MEP-PD-525 |  | Pressure testing & Insullation of water pipes at level 9 | 8d | 2015-08-09 | 2015-08-17 | C-MEP-PD-505, C-MEP-PD-475 | 159d | 0d | 9,573.63 | GEN |
| C-MEP-PD-515 |  | Installation drainage Pipes at level 9 | 25d | 2015-08-22 | 2015-09-19 | C-MEP-PD-505 SS, C-MEP-PD-465 SS | 148d | 0d | 30,204.4 | GEN |
| C-MEP-PD-535 |  | Pressure testing of drainage pipes at level 9 | 8d | 2015-10-12 | 2015-10-20 | C-MEP-PD-515, C-MEP-PD-485 SS | 132d | 0d | 1,651.42 | GEN |
| C-MEP-PD-545 |  | Installation of Outlets, Drains, Gullies, Cowls, & Clean out at level 9 | 20d | 2016-05-14 | 2016-06-05 | C-MEP-PD-525, C-MEP-PD-525 FF, C-F-FF-414, C-F-WF-414, C-F-FF-414 FF, C-F-WF-434, C-F-WF-414 FF, C-F-DW-414, C-MEP-PD-245, C-F-P-LSF-392 | 154d | 0d | 13,120.28 | GEN |
|  | 7 | **ELV systems** |  | 2015-07-23 | 2016-04-07 |  |  |  |  |  |
|  | 1 | **Room Management System** |  | 2015-07-29 | 2016-04-05 |  |  |  |  |  |
| C-ELV-RMS-545 |  | Installation of Cable Trays & Truncking at level 9 | 25d | 2015-07-29 | 2015-08-26 | C-ELV-CS-545 SS+5d | 140d | 0d | 2,769.38 |  |
| C-ELV-RMS-505 |  | Installation of RMS first fix (Conduits, Boxes within block work , Gypsum Boards & Raised FLooring at level 9 | 20d | 2015-08-16 | 2015-09-07 | C-F-P-313, C-F-P-303, SD-CS-L9-592, C-ELV-RMS-455 SS | 123d | 0d | 11,902.78 | GEN |
| C-ELV-RMS-515 |  | Installation of second fix (Cabling & Wirring etc..) at level 9 | 25d | 2015-09-08 | 2015-10-10 | C-ELV-RMS-505, C-ELV-RMS-545 | 136d | 0d | 11,902.78 | GEN |
| C-ELV-RMS-525 |  | Installation & Connection of ethernets & HVAC thermostates etc.. at level 9 | 25d | 2015-10-11 | 2015-11-08 | C-ELV-RMS-515 | 136d | 60d | 27,773.16 | GEN |
| C-ELV-RMS-535 |  | Installtion & Connection of Panels, Controller, switches, server etc..) at level 9 | 20d | 2016-03-14 | 2016-04-05 | C-ELV-RMS-525, C-ELV-RMS-485 | 175d | 0d | 27,773.16 |  |
|  | 12 | **Fire Alarm & Detection System** |  | 2015-08-10 | 2016-03-12 |  |  |  |  |  |
| C-ELV-FA-545 |  | Installation of Cable Trays & Truncking at level 9 | 25d | 2015-08-10 | 2015-09-07 | C-ELV-MSPA-545 SS+5d, SD-CS-L9-632 | 140d | 0d | 2,769.38 |  |
| C-ELV-FA-505 |  | Installation of FA first Fix Conduits, Boxes within block work , Gypsum Boards & Raised FLooring at level 9 | 20d | 2015-08-16 | 2015-09-07 | C-F-P-313, C-F-P-303, C-ELV-FA-455 SS | 125d | 0d | 13,660.92 | GEN |
| C-ELV-FA-515 |  | Installation of second fix (Cabling & Wirring etc..) at level 9 | 20d | 2015-09-08 | 2015-10-04 | C-ELV-FA-505, C-ELV-FA-545 | 141d | 0d | 22,768.2 | GEN |
| C-ELV-FA-525 |  | Installation & Connection of heat detector, smoke detector, flame detector etc.. at level 9 | 25d | 2015-10-05 | 2015-11-02 | C-ELV-FA-515 | 141d | 65d | 27,321.84 | GEN |
| C-ELV-FA-535 |  | Installtion & Connection of Racks & Panels at level 9 | 20d | 2016-02-18 | 2016-03-12 | C-ELV-FA-525, C-ELV-FA-485 SS | 156d | 0d | 27,321.84 |  |
|  | 2 | **Music System & Public Address System** |  | 2015-08-04 | 2016-03-29 |  |  |  |  |  |
| C-ELV-MSPA-545 |  | Installation of Cable Trays & Truncking at level 9 | 25d | 2015-08-04 | 2015-09-01 | C-ELV-RMS-545 SS+5d | 140d | 0d | 2,769.38 |  |
| C-ELV-MSPA-505 |  | Installation of MS/PA first fix (Conduits, Boxes within block work, Gypsum Boards & Raised FLooring at level 9 | 20d | 2015-10-28 | 2015-11-19 | C-F-P-313, C-F-P-303, SD-CS-L9-612, C-ELV-MSPA-455 SS | 62d | 0d | 6,994.34 | GEN |
| C-ELV-MSPA-515 |  | Installation of second fix (Cabling & Wirring etc..) at level 9 | 25d | 2015-11-21 | 2015-12-20 | C-ELV-MSPA-505, C-ELV-MSPA-545 | 76d | 0d | 6,994.34 | GEN |
| C-ELV-MSPA-525 |  | Installation & Connection of speakers, Amplifier & Controller at level 9 | 25d | 2015-12-21 | 2016-01-18 | C-ELV-MSPA-515 | 76d | 0d | 16,320.12 | GEN |
| C-ELV-MSPA-535 |  | Installtion & Connection of Media hub, panels and processor at level 9 | 20d | 2016-03-07 | 2016-03-29 | C-ELV-MSPA-525, C-ELV-MSPA-485 SS | 201d | 0d | 16,320.12 |  |

Notes:
- C-MEP-PD-505: Expenses: 1 83874.1
- C-MEP-PD-525: Expenses: 1 9573.63
- C-MEP-PD-515: Expenses: 1 30204.4
- C-MEP-PD-535: Expenses: 1 1651.42
- C-MEP-PD-545: Expenses: 1 13120.3
- C-ELV-RMS-545: Expenses: 1 2769.38
- C-ELV-RMS-505: Expenses: 1 11902.8
- C-ELV-RMS-515: Expenses: 1 11902.8
- C-ELV-RMS-525: Expenses: 1 27773.2
- C-ELV-RMS-535: Expenses: 1 27773.2
- C-ELV-FA-545: Expenses: 1 2769.38
- C-ELV-FA-505: Expenses: 1 13660.9
- C-ELV-FA-515: Expenses: 1 22768.2
- C-ELV-FA-525: Expenses: 1 27321.8
- C-ELV-FA-535: Expenses: 1 27321.8
- C-ELV-MSPA-545: Expenses: 1 2769.38
- C-ELV-MSPA-505: Expenses: 1 6994.34
- C-ELV-MSPA-515: Expenses: 1 6994.34
- C-ELV-MSPA-525: Expenses: 1 16320.1
- C-ELV-MSPA-535: Expenses: 1 16320.1

| ID | WBS | Activity | Duration | Start | Finish | Predecessors | Total float | Free float | Cost | AREA |
| --- | --- | --- | --- | --- | --- | --- | --- | --- | --- | --- |
|  | 3 | **IP CCTV & Access Control System** |  | 2015-08-16 | 2016-03-09 |  |  |  |  |  |
| C-ELV-CCTV-505 |  | Installation of CCTV first Fix Conduits, Boxes within block work, Gypsum Boards & Raised FLooring at level 9 | 20d | 2015-08-16 | 2015-09-07 | C-F-P-313, C-F-P-303, SD-CS-L9-652, C-ELV-CCTV-455 | 137d | 0d | 8,161.35 | GEN |
| C-ELV-CCTV-545 |  | Installation of Cable Trays & Truncking at level 9 | 25d | 2015-08-16 | 2015-09-13 | C-ELV-FA-545 SS+5d | 140d | 0d | 2,769.38 |  |
| C-ELV-CCTV-515 |  | Installation of second fix (Cabling & Wirring etc..) at level 9 | 20d | 2015-09-14 | 2015-10-10 | C-ELV-CCTV-505, C-ELV-CCTV-545 | 143d | 0d | 19,043.14 | GEN |
| C-ELV-CCTV-525 |  | Installation & Connection of Camera's & Alarms at level 9 | 18d | 2015-10-11 | 2015-10-31 | C-ELV-CCTV-515 | 143d | 67d | 183,698.91 | GEN |
| C-ELV-CCTV-535 |  | Installtion & Connection of Racks, Panels etc... at level 9 | 25d | 2016-02-09 | 2016-03-09 | C-ELV-CCTV-525 FF, C-ELV-CCTV-485 | 123d | 0d | 7,322.52 |  |
|  | 7 | **Communication System** |  | 2015-07-23 | 2016-04-07 |  |  |  |  |  |
| C-ELV-CS-545 |  | Installation of Cable Trays & Truncking at level 9 | 18d | 2015-07-23 | 2015-08-12 | C-MEP-E-656 SS, C-ELV-CS-455 SS | 140d | 0d | 2,769.38 |  |
| C-ELV-CS-505 |  | Installation of CS first fix (Conduits, Boxes within block work, Gypsum Boards & Raised FLooring at level 9 | 20d | 2015-08-16 | 2015-09-07 | C-F-P-313, C-F-P-303, SD-CS-L9-572, C-ELV-CS-455 | 125d | 0d | 27,356.12 | GEN |
| C-ELV-CS-515 |  | Installation of second fix (Cabling & Wirring etc..) at level 9 | 25d | 2015-09-08 | 2015-10-10 | C-ELV-CS-505, C-ELV-CS-545 | 136d | 0d | 82,068.35 | GEN |
| C-ELV-CS-525 |  | Installation & Connection of Wireless Access points & IP dect phone & RJ 45 at level 9 | 25d | 2015-10-11 | 2015-11-08 | C-ELV-CS-515 | 136d | 60d | 93,342.54 | GEN |
| C-ELV-CS-535 |  | Installtion & Connection of Controller & Instrumentation at level 9 | 20d | 2016-03-16 | 2016-04-07 | C-ELV-CS-525, C-ELV-CS-485 | 125d | 0d | 223,314.69 |  |
|  | 4 | **IP, SMATV & QAM Television System** |  | 2015-08-16 | 2016-01-11 |  |  |  |  |  |
| C-ELV-SMATV-505 |  | Installation of SMATV first Fix Conduits, Boxes within block work , Gypsum Boards & Raised FLooring at level 9 | 20d | 2015-08-16 | 2015-09-07 | C-F-P-313, C-F-P-303, SD-CS-L9-672, C-ELV-SMATV-455 SS | 136d | 0d | 4,452.18 | GEN |
| C-ELV-SMATV-545 |  | Installation of Cable Trays & Truncking at level 9 | 25d | 2015-08-22 | 2015-09-19 | C-ELV-CCTV-545 SS+5d | 140d | 0d | 2,769.38 |  |
| C-ELV-SMATV-515 |  | Installation of second fix (Cabling & Wirring etc..) at level 9 | 16d | 2015-09-23 | 2015-10-11 | C-ELV-SMATV-505, C-ELV-SMATV-545 | 142d | 0d | 10,388.41 | GEN |
| C-ELV-SMATV-525 |  | Installation & Connection of Outlets, switches and splitter at level 9 | 18d | 2015-10-12 | 2015-11-01 | C-ELV-SMATV-515 | 142d | 40d | 6,537.45 | GEN |
| C-ELV-SMATV-535 |  | Installtion & Connection of SMATV & QAM fiber & receiver at level 9 | 20d | 2015-12-20 | 2016-01-11 | C-ELV-SMATV-525, C-ELV-SMATV-485 SS | 167d | 0d | 2,419.21 |  |
|  | 5 | **BMS system** |  | 2015-08-16 | 2016-02-11 |  |  |  |  |  |
| C-MEP-BMS-505 |  | Installation of BMS first Fix Conduits, Boxes within block work , Gypsum Boards & Raised FLooring at level 9 | 20d | 2015-08-16 | 2015-09-07 | C-F-P-313, C-F-P-303, SD-CS-L9-552, C-MEP-BMS-455 SS | 119d | 0d | 8,895.95 | GEN |
| C-MEP-BMS-545 |  | Installation of Cable trays & Trunking at level 9 | 20d | 2015-08-27 | 2015-09-19 | C-ELV-SMATV-545 SS+5d | 140d | 0d |  |  |
| C-MEP-BMS-515 |  | Installation of BMS Cabling & Wirring at level 9 | 16d | 2015-09-23 | 2015-10-11 | C-MEP-BMS-505, C-MEP-BMS-545 | 140d | 25d | 11,861.27 | GEN |
| C-MEP-BMS-525 |  | Installation & Connection of BMS Sensors, Relays, & Valves at level 9 | 20d | 2015-11-10 | 2015-12-02 | C-MEP-BMS-515, C-MEP-PD-535, C-MEP-PD-525, C-MEP-FF-414, C-MEP-AC-868, C-MEP-AC-848, C-MEP-AC-858 | 115d | 39d | 14,826.58 | GEN |
| C-MEP-BMS-535 |  | Installtion & Connection of BMS Racks, Panels etc... at level 9 | 20d | 2016-01-19 | 2016-02-11 | C-MEP-BMS-525, C-MEP-BMS-485 SS | 191d | 0d | 14,826.58 |  |

Notes:
- C-ELV-CCTV-505: Expenses: 1 8161.35
- C-ELV-CCTV-545: Expenses: 1 2769.38
- C-ELV-CCTV-515: Expenses: 1 19043.1
- C-ELV-CCTV-525: Expenses: 1 183699
- C-ELV-CCTV-535: Expenses: 1 7322.52
- C-ELV-CS-545: Expenses: 1 2769.38
- C-ELV-CS-505: Expenses: 1 27356.1
- C-ELV-CS-515: Expenses: 1 82068.4
- C-ELV-CS-525: Expenses: 1 93342.5
- C-ELV-CS-535: Expenses: 1 223315
- C-ELV-SMATV-505: Expenses: 1 4452.18
- C-ELV-SMATV-545: Expenses: 1 2769.38
- C-ELV-SMATV-515: Expenses: 1 10388.4
- C-ELV-SMATV-525: Expenses: 1 6537.45
- C-ELV-SMATV-535: Expenses: 1 2419.21
- C-MEP-BMS-505: Expenses: 1 8895.95
- C-MEP-BMS-515: Expenses: 1 11861.3
- C-MEP-BMS-525: Expenses: 1 14826.6
- C-MEP-BMS-535: Expenses: 1 14826.6

| ID | WBS | Activity | Duration | Start | Finish | Predecessors | Total float | Free float | Cost | AREA |
| --- | --- | --- | --- | --- | --- | --- | --- | --- | --- | --- |
|  | 20 | **MEP - Level 10** |  | 2015-06-13 | 2016-09-22 |  |  |  |  |  |
|  | 1 | **Electrical** |  | 2015-07-08 | 2016-09-22 |  |  |  |  |  |
| C-MEP-E-726 |  | Installation of first Electrical Fix Conduits, Boxes within block work & Gypsum Boards at level 10 | 20d | 2015-07-08 | 2015-08-02 | C-F-P-363, C-MEP-E-246 | 120d | 5d | 55,235.7 | GEN |
| C-MEP-E-776 |  | Installation of Cable Trays & Truncking at level 10 | 18d | 2015-07-19 | 2015-08-08 | C-MEP-FF-484 SS+10d, C-MEP-PD-605 SS+5d, C-MEP-E-296 | 115d | 0d | 21,017.55 |  |
| C-MEP-E-736 |  | Installation of Electrical Second Fix (Cabling & Wirring etc..). at level 10 | 18d | 2015-08-09 | 2015-08-29 | C-MEP-E-726, C-MEP-E-776, C-MEP-E-256 | 115d | 11d | 190,528.33 | GEN |
| C-MEP-E-746 |  | Installation & Connection of Electrical DB's, SMDB's at level 10 | 16d | 2015-09-12 | 2015-10-03 | C-MEP-E-736, C-MEP-E-506 | 104d | 0d | 78,921.15 | GEN |
| C-MEP-E-766 |  | Installation & Connection of Lighting Fixtures & Sockets at level 10 | 14d | 2016-09-04 | 2016-09-22 | C-MEP-E-736, C-F-CF-877, C-F-CF-867, C-F-WF-494, C-F-WF-504, C-MEP-E-226, C-F-P-LSF-402 FF | 90d | 0d | 71,857.69 | GEN |
|  | 2 | **HVAC** |  | 2015-06-13 | 2016-06-11 |  |  |  |  |  |
| C-MEP-AC-968 |  | Installation of Ductwork, Insulation & Dampers at level 10 | 23d | 2015-06-13 | 2015-07-08 | C-F-P-363 SS, C-MEP-AC-248, SD-CS-L10-372 | 119d | 0d | 140,612.08 | GEN |
| C-MEP-AC-988 |  | Installation of Chilled Water Pipes & Valves at level 10 | 25d | 2015-06-24 | 2015-07-25 | C-MEP-AC-968 SS+10d | 163d | 32d | 30,741.92 | GEN |
| C-MEP-AC-1018 |  | Pressure testing of Ductwork at level 10 | 8d | 2015-08-10 | 2015-08-18 | C-MEP-AC-968, C-MEP-AC-858 | 114d | 0d |  | GEN |
| C-MEP-AC-1028 |  | Installation of HVAC equipments AHU's, FCU's, ERU's, VAV's, CAV's & Fans at level 10 | 25d | 2015-08-30 | 2015-09-30 | C-MEP-AC-1018 FF, C-MEP-AC-1008 FF, C-MEP-AC-968 SS | 152d | 17d | 50,324.94 | GEN |
| C-MEP-AC-1008 |  | Pressure testing & Insulation of Chilled Water Pipes at level 10 | 12d | 2015-09-14 | 2015-09-30 | C-MEP-AC-988, C-MEP-AC-188, C-MEP-AC-848 | 120d | 0d | 8,821.1 | GEN |
| C-MEP-AC-978 |  | Installation of Silencers, Attenuators, Isolators & Detectors at level 10 | 12d | 2015-10-04 | 2015-10-17 | C-MEP-AC-1018, C-MEP-AC-818 SS | 158d | 0d | 28,274.51 | GEN |
| C-MEP-AC-998 |  | Installation of Chilled Water Pipes Control Devices & Isolator at level 10 | 8d | 2015-10-18 | 2015-10-26 | C-MEP-AC-1008, C-MEP-AC-838 | 121d | 0d | 2,889.38 | GEN |
| C-MEP-AC-1038 |  | Installation of Grilles, Diffusers & Controller at level 10 | 12d | 2016-05-29 | 2016-06-11 | C-MEP-AC-1028, C-F-CF-877, C-F-CF-867, C-F-WF-504 FF, C-F-CF-867 FF, C-F-WF-494 FF, C-MEP-AC-318 | 157d | 8d | 55,880.87 | GEN |
|  | 3 | **Fire Fighting** |  | 2015-06-24 | 2016-04-11 |  |  |  |  |  |
| C-MEP-FF-484 |  | Installation of FIre fighting Pipes at level 10 | 25d | 2015-06-24 | 2015-07-25 | C-MEP-AC-968 SS+10d, SD-CS-L10-392 | 124d | 9d | 45,406.88 | GEN |
| C-MEP-FF-504 |  | Pressure testing of fire fighting pipes at level 10 | 8d | 2015-08-24 | 2015-09-01 | C-MEP-FF-484, C-MEP-FF-424 | 130d | 0d | 5,280.67 | GEN |
| C-MEP-FF-494 |  | Installation of fire Fighting Valves at level 10 | 20d | 2015-09-02 | 2015-09-28 | C-MEP-FF-504 | 154d | 19d | 18,427.34 | GEN |
| C-MEP-FF-514 |  | Installation of Fire Fighting Sprinklers & Fire hose Cabinets & Extinguishers at level 10 | 14d | 2016-03-27 | 2016-04-11 | C-MEP-FF-494, C-F-CF-867, C-F-CF-857, C-MEP-FF-504, C-MEP-FF-434 SS | 141d | 0d | 64,097.37 | GEN |
|  | 4 | **Plumbing & Drainage** |  | 2015-07-11 | 2016-06-05 |  |  |  |  |  |
| C-MEP-PD-605 |  | Installation of Water Pipes & Valves (Hot & Cold atc..) at level 10 | 20d | 2015-07-11 | 2015-08-04 | C-MEP-FF-484 SS, C-F-P-373, SD-CS-L10-432 | 115d | 0d | 83,874.06 | GEN |
| C-MEP-PD-625 |  | Pressure testing & Insullation of water pipes at level 10 | 8d | 2015-08-18 | 2015-08-26 | C-MEP-PD-605, C-MEP-PD-525 | 159d | 0d | 9,573.63 | GEN |
| C-MEP-PD-615 |  | Installation drainage Pipes at level 10 | 25d | 2015-08-22 | 2015-09-19 | C-MEP-PD-605 SS, C-MEP-PD-515 SS | 149d | 0d | 30,204.4 | GEN |
| C-MEP-PD-635 |  | Pressure testing of drainage pipes at level 10 | 8d | 2015-10-12 | 2015-10-20 | C-MEP-PD-615, C-MEP-PD-535 SS | 135d | 0d | 1,651.42 | GEN |
| C-MEP-PD-645 |  | Installation of Outlets, Drains, Gullies, Cowls, & Clean out at level 10 | 20d | 2016-05-14 | 2016-06-05 | C-MEP-PD-625, C-MEP-PD-625 FF, C-F-FF-494, C-F-WF-494, C-F-FF-494 FF, C-F-WF-514, C-F-WF-494 FF, C-F-DW-494, C-MEP-PD-005, C-F-P-LSF-402 FF | 164d | 0d | 13,120.28 | GEN |

Notes:
- C-MEP-E-726: Expenses: 1 55235.7
- C-MEP-E-776: Expenses: 1 21017.5
- C-MEP-E-736: Expenses: 1 57962.7; 2 132566
- C-MEP-E-746: Expenses: 1 78921.1
- C-MEP-E-766: Expenses: 1 71857.7
- C-MEP-AC-968: Expenses: 1 140612
- C-MEP-AC-988: Expenses: 1 30741.9
- C-MEP-AC-1028: Expenses: 1 50324.9
- C-MEP-AC-1008: Expenses: 1 8821.1
- C-MEP-AC-978: Expenses: 1 28274.5
- C-MEP-AC-998: Expenses: 1 2889.38
- C-MEP-AC-1038: Expenses: 1 55880.9
- C-MEP-FF-484: Expenses: 1 45406.9
- C-MEP-FF-504: Expenses: 1 5280.67
- C-MEP-FF-494: Expenses: 1 18427.3
- C-MEP-FF-514: Expenses: 1 64097.4
- C-MEP-PD-605: Expenses: 1 83874.1
- C-MEP-PD-625: Expenses: 1 9573.63
- C-MEP-PD-615: Expenses: 1 30204.4
- C-MEP-PD-635: Expenses: 1 1651.42
- C-MEP-PD-645: Expenses: 1 13120.3

| ID | WBS | Activity | Duration | Start | Finish | Predecessors | Total float | Free float | Cost | AREA |
| --- | --- | --- | --- | --- | --- | --- | --- | --- | --- | --- |
|  | 7 | **ELV systems** |  | 2015-07-23 | 2016-05-01 |  |  |  |  |  |
|  | 1 | **Room Management System** |  | 2015-07-29 | 2016-04-05 |  |  |  |  |  |
| C-ELV-RMS-645 |  | Installation of Cable Trays & Truncking at level 10 | 25d | 2015-07-29 | 2015-08-26 | C-ELV-CS-645 SS+5d | 143d | 0d | 2,769.38 |  |
| C-ELV-RMS-605 |  | Installation of RMS first fix (Conduits, Boxes within block work , Gypsum Boards & Raised FLooring at level 10 | 20d | 2015-08-16 | 2015-09-07 | C-F-P-373, C-F-P-363, SD-CS-L10-612, C-ELV-RMS-505 SS | 123d | 0d | 11,902.78 | GEN |
| C-ELV-RMS-615 |  | Installation of second fix (Cabling & Wirring etc..) at level 10 | 25d | 2015-09-08 | 2015-10-10 | C-ELV-RMS-605, C-ELV-RMS-645 | 139d | 0d | 11,902.78 | GEN |
| C-ELV-RMS-625 |  | Installation & Connection of ethernets & HVAC thermostates etc.. at level 10 | 25d | 2015-10-11 | 2015-11-08 | C-ELV-RMS-615 | 139d | 60d | 27,773.16 | GEN |
| C-ELV-RMS-635 |  | Installtion & Connection of Panels, Controller, switches, server etc..) at level 10 | 20d | 2016-03-14 | 2016-04-05 | C-ELV-RMS-625, C-ELV-RMS-535 SS | 175d | 0d | 27,773.16 |  |
|  | 12 | **Fire Alarm & Detection System** |  | 2015-08-10 | 2016-03-12 |  |  |  |  |  |
| C-ELV-FA-645 |  | Installation of Cable Trays & Truncking at level 10 | 25d | 2015-08-10 | 2015-09-07 | C-ELV-MSPA-645 SS+5d, SD-CS-L10-652 | 143d | 0d | 2,769.38 |  |
| C-ELV-FA-605 |  | Installation of FA first Fix Conduits, Boxes within block work , Gypsum Boards & Raised FLooring at level 10 | 20d | 2015-08-16 | 2015-09-07 | C-F-P-373, C-F-P-363, C-ELV-FA-505 SS | 125d | 0d | 13,660.92 | GEN |
| C-ELV-FA-615 |  | Installation of second fix (Cabling & Wirring etc..) at level 10 | 20d | 2015-09-08 | 2015-10-04 | C-ELV-FA-605, C-ELV-FA-645 | 144d | 0d | 22,768.2 | GEN |
| C-ELV-FA-625 |  | Installation & Connection of heat detector, smoke detector, flame detector etc.. at level 10 | 25d | 2015-10-05 | 2015-11-02 | C-ELV-FA-615 | 144d | 65d | 27,321.84 | GEN |
| C-ELV-FA-635 |  | Installtion & Connection of Racks & Panels at level 10 | 20d | 2016-02-18 | 2016-03-12 | C-ELV-FA-625, C-ELV-FA-535 SS | 156d | 0d | 27,321.84 |  |
|  | 2 | **Music System & Public Address System** |  | 2015-08-04 | 2016-03-29 |  |  |  |  |  |
| C-ELV-MSPA-645 |  | Installation of Cable Trays & Truncking at level 10 | 25d | 2015-08-04 | 2015-09-01 | C-ELV-RMS-645 SS+5d | 143d | 0d | 2,769.38 |  |
| C-ELV-MSPA-605 |  | Installation of MS/PA first fix (Conduits, Boxes within block work, Gypsum Boards & Raised FLooring at level 10 | 20d | 2015-10-28 | 2015-11-19 | C-F-P-373, C-F-P-363, SD-CS-L10-632, C-ELV-MSPA-505 SS | 62d | 0d | 6,994.34 | GEN |
| C-ELV-MSPA-615 |  | Installation of second fix (Cabling & Wirring etc..) at level 10 | 25d | 2015-11-21 | 2015-12-20 | C-ELV-MSPA-605, C-ELV-MSPA-645 | 79d | 0d | 6,994.34 | GEN |
| C-ELV-MSPA-625 |  | Installation & Connection of speakers, Amplifier & Controller at level 10 | 25d | 2015-12-21 | 2016-01-18 | C-ELV-MSPA-615 | 79d | 0d | 16,320.12 | GEN |
| C-ELV-MSPA-635 |  | Installtion & Connection of Media hub, panels and processor at level 10 | 20d | 2016-03-07 | 2016-03-29 | C-ELV-MSPA-625, C-ELV-MSPA-535 SS | 201d | 0d | 16,320.12 |  |
|  | 3 | **IP CCTV & Access Control System** |  | 2015-08-16 | 2016-03-09 |  |  |  |  |  |
| C-ELV-CCTV-605 |  | Installation of CCTV first Fix Conduits, Boxes within block work, Gypsum Boards & Raised FLooring at level 10 | 20d | 2015-08-16 | 2015-09-07 | C-F-P-373, C-F-P-363, SD-CS-L10-672, C-ELV-CCTV-505 SS | 137d | 0d | 8,161.35 | GEN |
| C-ELV-CCTV-645 |  | Installation of Cable Trays & Truncking at level 10 | 25d | 2015-08-16 | 2015-09-13 | C-ELV-FA-645 SS+5d | 143d | 0d | 2,769.38 |  |
| C-ELV-CCTV-615 |  | Installation of second fix (Cabling & Wirring etc..) at level 10 | 20d | 2015-09-14 | 2015-10-10 | C-ELV-CCTV-605, C-ELV-CCTV-645 | 146d | 0d | 19,043.14 | GEN |
| C-ELV-CCTV-625 |  | Installation & Connection of Camera's & Alarms at level 10 | 18d | 2015-10-11 | 2015-10-31 | C-ELV-CCTV-615 | 146d | 67d | 183,698.91 | GEN |
| C-ELV-CCTV-635 |  | Installtion & Connection of Racks, Panels etc... at level 10 | 25d | 2016-02-09 | 2016-03-09 | C-ELV-CCTV-625 FF, C-ELV-CCTV-535 SS | 123d | 0d | 7,322.52 |  |

Notes:
- C-ELV-RMS-645: Expenses: 1 2769.38
- C-ELV-RMS-605: Expenses: 1 11902.8
- C-ELV-RMS-615: Expenses: 1 11902.8
- C-ELV-RMS-625: Expenses: 1 27773.2
- C-ELV-RMS-635: Expenses: 1 27773.2
- C-ELV-FA-645: Expenses: 1 2769.38
- C-ELV-FA-605: Expenses: 1 13660.9
- C-ELV-FA-615: Expenses: 1 22768.2
- C-ELV-FA-625: Expenses: 1 27321.8
- C-ELV-FA-635: Expenses: 1 27321.8
- C-ELV-MSPA-645: Expenses: 1 2769.38
- C-ELV-MSPA-605: Expenses: 1 6994.34
- C-ELV-MSPA-615: Expenses: 1 6994.34
- C-ELV-MSPA-625: Expenses: 1 16320.1
- C-ELV-MSPA-635: Expenses: 1 16320.1
- C-ELV-CCTV-605: Expenses: 1 8161.35
- C-ELV-CCTV-645: Expenses: 1 2769.38
- C-ELV-CCTV-615: Expenses: 1 19043.1
- C-ELV-CCTV-625: Expenses: 1 183699
- C-ELV-CCTV-635: Expenses: 1 7322.52

| ID | WBS | Activity | Duration | Start | Finish | Predecessors | Total float | Free float | Cost | AREA |
| --- | --- | --- | --- | --- | --- | --- | --- | --- | --- | --- |
|  | 7 | **Communication System** |  | 2015-07-23 | 2016-05-01 |  |  |  |  |  |
| C-ELV-CS-645 |  | Installation of Cable Trays & Truncking at level 10 | 18d | 2015-07-23 | 2015-08-12 | C-MEP-E-776 SS, C-ELV-CS-545 SS | 143d | 0d | 2,769.38 |  |
| C-ELV-CS-605 |  | Installation of CS first fix (Conduits, Boxes within block work, Gypsum Boards & Raised FLooring at level 10 | 20d | 2015-08-16 | 2015-09-07 | C-F-P-373, C-F-P-363, SD-CS-L10-592, C-ELV-CS-505 SS | 125d | 0d | 27,356.12 | GEN |
| C-ELV-CS-615 |  | Installation of second fix (Cabling & Wirring etc..) at level 10 | 25d | 2015-09-08 | 2015-10-10 | C-ELV-CS-605, C-ELV-CS-645 | 139d | 0d | 82,068.35 | GEN |
| C-ELV-CS-625 |  | Installation & Connection of Wireless Access points & IP dect phone & RJ 45 at level 10 | 25d | 2015-10-11 | 2015-11-08 | C-ELV-CS-615 | 139d | 60d | 93,342.54 | GEN |
| C-ELV-CS-635 |  | Installtion & Connection of Controller & Instrumentation at level 10 | 20d | 2016-04-09 | 2016-05-01 | C-ELV-CS-625, C-ELV-CS-535 | 125d | 0d | 223,314.69 |  |
|  | 4 | **IP, SMATV & QAM Television System** |  | 2015-08-16 | 2016-01-11 |  |  |  |  |  |
| C-ELV-SMATV-605 |  | Installation of SMATV first Fix Conduits, Boxes within block work , Gypsum Boards & Raised FLooring at level 10 | 20d | 2015-08-16 | 2015-09-07 | C-F-P-373, C-F-P-363, SD-CS-L10-692, C-ELV-SMATV-505 SS | 136d | 0d | 4,452.18 | GEN |
| C-ELV-SMATV-645 |  | Installation of Cable Trays & Truncking at level 10 | 25d | 2015-08-22 | 2015-09-19 | C-ELV-CCTV-645 SS+5d | 143d | 0d | 2,769.38 |  |
| C-ELV-SMATV-615 |  | Installation of second fix (Cabling & Wirring etc..) at level 10 | 16d | 2015-09-23 | 2015-10-11 | C-ELV-SMATV-605, C-ELV-SMATV-645 | 145d | 0d | 10,388.41 | GEN |
| C-ELV-SMATV-625 |  | Installation & Connection of Outlets, switches and splitter at level 10 | 18d | 2015-10-12 | 2015-11-01 | C-ELV-SMATV-615 | 145d | 40d | 6,537.45 | GEN |
| C-ELV-SMATV-635 |  | Installtion & Connection of SMATV & QAM fiber & receiver at level 10 | 20d | 2015-12-20 | 2016-01-11 | C-ELV-SMATV-625, C-ELV-SMATV-535 SS | 167d | 0d | 2,419.21 |  |
|  | 5 | **BMS system** |  | 2015-08-16 | 2016-02-11 |  |  |  |  |  |
| C-MEP-BMS-605 |  | Installation of BMS first Fix Conduits, Boxes within block work , Gypsum Boards & Raised FLooring at level 10 | 20d | 2015-08-16 | 2015-09-07 | C-F-P-373, C-F-P-363, SD-CS-L10-572, C-MEP-BMS-505 SS | 119d | 0d | 8,895.95 | GEN |
| C-MEP-BMS-645 |  | Installation of Cable trays & Trunking at level 10 | 20d | 2015-08-27 | 2015-09-19 | C-ELV-SMATV-645 SS+5d | 143d | 0d |  |  |
| C-MEP-BMS-615 |  | Installation of BMS Cabling & Wirring at level 10 | 16d | 2015-09-23 | 2015-10-11 | C-MEP-BMS-605, C-MEP-BMS-645 | 143d | 8d | 11,861.27 | GEN |
| C-MEP-BMS-625 |  | Installation & Connection of BMS Sensors, Relays, & Valves at level 10 | 20d | 2015-10-21 | 2015-11-12 | C-MEP-BMS-615, C-MEP-PD-635, C-MEP-PD-625, C-MEP-FF-494, C-MEP-AC-1028, C-MEP-AC-1008, C-MEP-AC-1018 | 135d | 56d | 14,826.58 | GEN |
| C-MEP-BMS-635 |  | Installtion & Connection of BMS Racks, Panels etc... at level 10 | 20d | 2016-01-19 | 2016-02-11 | C-MEP-BMS-625, C-MEP-BMS-535 SS | 191d | 0d | 14,826.58 |  |
|  | 19 | **MEP - Level 11** |  | 2015-06-11 | 2016-10-10 |  |  |  |  |  |
|  | 1 | **Electrical** |  | 2015-07-08 | 2016-10-10 |  |  |  |  |  |
| C-MEP-E-426 |  | Installation of first Electrical Fix Conduits, Boxes within block work & Gypsum Boards at level 11 | 20d | 2015-07-08 | 2015-08-02 | C-F-P-213, C-MEP-E-001 | 150d | 5d | 55,235.7 | GEN |
| C-MEP-E-476 |  | Installation of Cable Trays & Truncking at level 11 | 18d | 2015-07-19 | 2015-08-08 | C-MEP-FF-284 SS+10d, C-MEP-PD-355 SS+5d, C-MEP-E-002 | 150d | 0d | 21,017.55 |  |
| C-MEP-E-436 |  | Installation of Electrical Second Fix (Cabling & Wirring etc..). at level 11 | 18d | 2015-08-09 | 2015-08-29 | C-MEP-E-426, C-MEP-E-476, C-MEP-E-003 | 155d | 15d | 190,528.33 | GEN |
| C-MEP-E-446 |  | Installation & Connection of Electrical DB's, SMDB's at level 11 | 16d | 2015-09-16 | 2015-10-07 | C-MEP-E-436, C-MEP-E-866 SS | 148d | 4d | 78,921.15 | GEN |
| C-MEP-E-466 |  | Installation & Connection of Lighting Fixtures & Sockets at level 11 | 14d | 2016-09-25 | 2016-10-10 | C-MEP-E-436, C-F-CF-527, C-F-CF-517, C-F-WF-294, C-F-WF-304, C-MEP-E-346, C-F-P-LSF-412 FF | 86d | 0d | 71,857.69 | GEN |

Notes:
- C-ELV-CS-645: Expenses: 1 2769.38
- C-ELV-CS-605: Expenses: 1 27356.1
- C-ELV-CS-615: Expenses: 1 82068.4
- C-ELV-CS-625: Expenses: 1 93342.5
- C-ELV-CS-635: Expenses: 1 223315
- C-ELV-SMATV-605: Expenses: 1 4452.18
- C-ELV-SMATV-645: Expenses: 1 2769.38
- C-ELV-SMATV-615: Expenses: 1 10388.4
- C-ELV-SMATV-625: Expenses: 1 6537.45
- C-ELV-SMATV-635: Expenses: 1 2419.21
- C-MEP-BMS-605: Expenses: 1 8895.95
- C-MEP-BMS-615: Expenses: 1 11861.3
- C-MEP-BMS-625: Expenses: 1 14826.6
- C-MEP-BMS-635: Expenses: 1 14826.6
- C-MEP-E-426: Expenses: 1 55235.7
- C-MEP-E-476: Expenses: 1 21017.5
- C-MEP-E-436: Expenses: 1 57962.7; 2 132566
- C-MEP-E-446: Expenses: 1 78921.1
- C-MEP-E-466: Expenses: 1 71857.7

| ID | WBS | Activity | Duration | Start | Finish | Predecessors | Total float | Free float | Cost | AREA |
| --- | --- | --- | --- | --- | --- | --- | --- | --- | --- | --- |
|  | 2 | **HVAC** |  | 2015-06-11 | 2016-06-21 |  |  |  |  |  |
| C-MEP-AC-568 |  | Installation of Ductwork, Insulation & Dampers at level 11 | 23d | 2015-06-11 | 2015-07-07 | C-F-P-213 SS, C-MEP-AC-408, SD-CS-L11-392 | 104d | 0d | 140,612.08 | GEN |
| C-MEP-AC-588 |  | Installation of Chilled Water Pipes & Valves at level 11 | 25d | 2015-06-23 | 2015-07-23 | C-MEP-AC-568 SS+10d, C-MEP-AC-348 | 176d | 40d | 30,741.92 | GEN |
| C-MEP-AC-618 |  | Pressure testing of Ductwork at level 11 | 8d | 2015-08-19 | 2015-08-27 | C-MEP-AC-568, C-MEP-AC-1018 | 114d | 0d |  | GEN |
| C-MEP-AC-628 |  | Installation of HVAC equipments AHU's, FCU's, ERU's, VAV's, CAV's & Fans at level 11 | 25d | 2015-09-13 | 2015-10-14 | C-MEP-AC-618 FF, C-MEP-AC-608 FF, C-MEP-AC-568 SS | 170d | 22d | 52,730.55 | GEN |
| C-MEP-AC-608 |  | Pressure testing & Insulation of Chilled Water Pipes at level 11 | 12d | 2015-10-01 | 2015-10-14 | C-MEP-AC-588, C-MEP-AC-1008 | 120d | 0d | 8,821.1 | GEN |
| C-MEP-AC-578 |  | Installation of Silencers, Attenuators, Isolators & Detectors at level 11 | 12d | 2015-10-04 | 2015-10-17 | C-MEP-AC-618, C-MEP-AC-978 SS | 161d | 0d | 28,274.51 | GEN |
| C-MEP-AC-598 |  | Installation of Chilled Water Pipes Control Devices & Isolator at level 11 | 8d | 2015-10-27 | 2015-11-04 | C-MEP-AC-608, C-MEP-AC-998 | 121d | 0d | 2,889.38 | GEN |
| C-MEP-AC-638 |  | Installation of Grilles, Diffusers & Controller at level 11 | 12d | 2016-06-08 | 2016-06-21 | C-MEP-AC-628, C-F-CF-527, C-F-CF-517, C-F-WF-304 FF, C-F-CF-517 FF, C-F-WF-294 FF, C-MEP-AC-478 | 148d | 0d | 55,880.87 | GEN |
|  | 3 | **Fire Fighting** |  | 2015-06-23 | 2016-04-11 |  |  |  |  |  |
| C-MEP-FF-284 |  | Installation of FIre fighting Pipes at level 11 | 25d | 2015-06-23 | 2015-07-23 | C-MEP-AC-568 SS+10d, SD-CS-L11-412 | 160d | 10d | 45,406.88 | GEN |
| C-MEP-FF-304 |  | Pressure testing of fire fighting pipes at level 11 | 8d | 2015-09-02 | 2015-09-10 | C-MEP-FF-284, C-MEP-FF-504 | 130d | 0d | 5,280.67 | GEN |
| C-MEP-FF-294 |  | Installation of fire Fighting Valves at level 11 | 20d | 2015-10-18 | 2015-11-09 | C-MEP-FF-304, C-MEP-FF-414 SS | 121d | 0d | 18,427.34 | GEN |
| C-MEP-FF-314 |  | Installation of Fire Fighting Sprinklers & Fire hose Cabinets & Extinguishers at level 11 | 14d | 2016-03-27 | 2016-04-11 | C-MEP-FF-294, C-F-CF-517, C-F-CF-507, C-MEP-FF-304, C-MEP-FF-514 SS | 141d | 0d | 64,097.37 | GEN |
|  | 4 | **Plumbing & Drainage** |  | 2015-07-11 | 2016-06-05 |  |  |  |  |  |
| C-MEP-PD-355 |  | Installation of Water Pipes & Valves (Hot & Cold atc..) at level 11 | 20d | 2015-07-11 | 2015-08-04 | C-MEP-FF-284 SS, C-F-P-223, SD-CS-L11-452 | 150d | 0d | 83,874.06 | GEN |
| C-MEP-PD-365 |  | Installation drainage Pipes at level 11 | 25d | 2015-08-22 | 2015-09-19 | C-MEP-PD-355 SS, C-MEP-PD-615 SS | 149d | 0d | 30,204.4 | GEN |
| C-MEP-PD-375 |  | Pressure testing & Insullation of water pipes at level 11 | 8d | 2015-08-27 | 2015-09-05 | C-MEP-PD-355, C-MEP-PD-625 | 159d | 0d | 9,573.63 | GEN |
| C-MEP-PD-385 |  | Pressure testing of drainage pipes at level 11 | 8d | 2015-09-23 | 2015-10-01 | C-MEP-PD-365 | 181d | 33d | 1,651.42 | GEN |
| C-MEP-PD-395 |  | Installation of Outlets, Drains, Gullies, Cowls, & Clean out at level 11 | 20d | 2016-05-14 | 2016-06-05 | C-MEP-PD-375, C-MEP-PD-375 FF, C-F-FF-294, C-F-WF-294, C-F-FF-294 FF, C-F-WF-314, C-F-WF-294 FF, C-F-DW-294, C-MEP-PD-195, C-F-P-LSF-412 FF | 164d | 0d | 13,120.28 | GEN |
|  | 7 | **ELV systems** |  | 2015-07-23 | 2016-05-24 |  |  |  |  |  |
|  | 1 | **Room Management System** |  | 2015-07-29 | 2016-04-05 |  |  |  |  |  |
| C-ELV-RMS-395 |  | Installation of Cable Trays & Truncking at level 11 | 18d | 2015-07-29 | 2015-08-18 | C-ELV-CS-395 SS+5d | 173d | 0d | 2,769.38 |  |
| C-ELV-RMS-355 |  | Installation of RMS first fix (Conduits, Boxes within block work , Gypsum Boards & Raised FLooring at level 11 | 20d | 2015-08-16 | 2015-09-07 | C-F-P-223, C-F-P-213, SD-CS-L11-632, C-ELV-RMS-605 SS | 123d | 0d | 11,902.78 | GEN |
| C-ELV-RMS-365 |  | Installation of second fix (Cabling & Wirring etc..) at level 11 | 25d | 2015-09-08 | 2015-10-10 | C-ELV-RMS-355, C-ELV-RMS-395 | 169d | 0d | 11,902.78 | GEN |
| C-ELV-RMS-375 |  | Installation & Connection of ethernets & HVAC thermostates etc.. at level 11 | 25d | 2015-10-11 | 2015-11-08 | C-ELV-RMS-365 | 169d | 60d | 27,773.16 | GEN |
| C-ELV-RMS-385 |  | Installtion & Connection of Panels, Controller, switches, server etc..) at level 11 | 20d | 2016-03-14 | 2016-04-05 | C-ELV-RMS-375, C-ELV-RMS-635 SS | 175d | 0d | 27,773.16 |  |

Notes:
- C-MEP-AC-568: Expenses: 1 140612
- C-MEP-AC-588: Expenses: 1 30741.9
- C-MEP-AC-628: Expenses: 1 52730.6
- C-MEP-AC-608: Expenses: 1 8821.1
- C-MEP-AC-578: Expenses: 1 28274.5
- C-MEP-AC-598: Expenses: 1 2889.38
- C-MEP-AC-638: Expenses: 1 55880.9
- C-MEP-FF-284: Expenses: 1 45406.9
- C-MEP-FF-304: Expenses: 1 5280.67
- C-MEP-FF-294: Expenses: 1 18427.3
- C-MEP-FF-314: Expenses: 1 64097.4
- C-MEP-PD-355: Expenses: 1 83874.1
- C-MEP-PD-365: Expenses: 1 30204.4
- C-MEP-PD-375: Expenses: 1 9573.63
- C-MEP-PD-385: Expenses: 1 1651.42
- C-MEP-PD-395: Expenses: 1 13120.3
- C-ELV-RMS-395: Expenses: 1 2769.38
- C-ELV-RMS-355: Expenses: 1 11902.8
- C-ELV-RMS-365: Expenses: 1 11902.8
- C-ELV-RMS-375: Expenses: 1 27773.2
- C-ELV-RMS-385: Expenses: 1 27773.2

| ID | WBS | Activity | Duration | Start | Finish | Predecessors | Total float | Free float | Cost | AREA |
| --- | --- | --- | --- | --- | --- | --- | --- | --- | --- | --- |
|  | 12 | **Fire Alarm & Detection System** |  | 2015-08-10 | 2016-03-12 |  |  |  |  |  |
| C-ELV-FA-395 |  | Installation of Cable Trays & Truncking at level 11 | 18d | 2015-08-10 | 2015-08-30 | C-ELV-MSPA-395 SS+5d, SD-CS-L11-672 | 173d | 0d | 2,769.38 |  |
| C-ELV-FA-355 |  | Installation of FA first Fix Conduits, Boxes within block work , Gypsum Boards & Raised FLooring at level 11 | 20d | 2015-08-16 | 2015-09-07 | C-F-P-223, C-F-P-213, C-ELV-FA-605 SS | 125d | 0d | 13,660.92 | GEN |
| C-ELV-FA-365 |  | Installation of second fix (Cabling & Wirring etc..) at level 11 | 20d | 2015-09-08 | 2015-10-04 | C-ELV-FA-355, C-ELV-FA-395 | 174d | 0d | 22,768.2 | GEN |
| C-ELV-FA-375 |  | Installation & Connection of heat detector, smoke detector, flame detector etc.. at level 11 | 25d | 2015-10-05 | 2015-11-02 | C-ELV-FA-365 | 174d | 65d | 27,321.84 | GEN |
| C-ELV-FA-385 |  | Installtion & Connection of Racks & Panels at level 11 | 20d | 2016-02-18 | 2016-03-12 | C-ELV-FA-375, C-ELV-FA-635 SS | 156d | 0d | 27,321.84 |  |
|  | 2 | **Music System & Public Address System** |  | 2015-08-04 | 2016-03-29 |  |  |  |  |  |
| C-ELV-MSPA-395 |  | Installation of Cable Trays & Truncking at level 11 | 18d | 2015-08-04 | 2015-08-24 | C-ELV-RMS-395 SS+5d | 173d | 0d | 2,769.38 |  |
| C-ELV-MSPA-355 |  | Installation of MS/PA first fix (Conduits, Boxes within block work, Gypsum Boards & Raised FLooring at level 11 | 20d | 2015-10-28 | 2015-11-19 | C-F-P-223, C-F-P-213, SD-CS-L11-652, C-ELV-MSPA-605 SS | 62d | 0d | 6,994.34 | GEN |
| C-ELV-MSPA-365 |  | Installation of second fix (Cabling & Wirring etc..) at level 11 | 25d | 2015-11-21 | 2015-12-20 | C-ELV-MSPA-355, C-ELV-MSPA-395 | 109d | 0d | 6,994.34 | GEN |
| C-ELV-MSPA-375 |  | Installation & Connection of speakers, Amplifier & Controller at level 11 | 25d | 2015-12-21 | 2016-01-18 | C-ELV-MSPA-365 | 109d | 0d | 16,320.12 | GEN |
| C-ELV-MSPA-385 |  | Installtion & Connection of Media hub, panels and processor at level 11 | 20d | 2016-03-07 | 2016-03-29 | C-ELV-MSPA-375, C-ELV-MSPA-635 SS | 201d | 0d | 16,320.12 |  |
|  | 3 | **IP CCTV & Access Control System** |  | 2015-08-16 | 2016-03-09 |  |  |  |  |  |
| C-ELV-CCTV-355 |  | Installation of CCTV first Fix Conduits, Boxes within block work, Gypsum Boards & Raised FLooring at level 11 | 20d | 2015-08-16 | 2015-09-07 | C-F-P-223, C-F-P-213, SD-CS-L11-692, C-ELV-CCTV-605 SS | 137d | 0d | 8,161.35 | GEN |
| C-ELV-CCTV-395 |  | Installation of Cable Trays & Truncking at level 11 | 18d | 2015-08-16 | 2015-09-05 | C-ELV-FA-395 SS+5d | 173d | 0d | 2,769.38 |  |
| C-ELV-CCTV-365 |  | Installation of second fix (Cabling & Wirring etc..) at level 11 | 20d | 2015-09-08 | 2015-10-04 | C-ELV-CCTV-355, C-ELV-CCTV-395 | 181d | 0d | 19,043.14 | GEN |
| C-ELV-CCTV-375 |  | Installation & Connection of Camera's & Alarms at level 11 | 18d | 2015-10-05 | 2015-10-25 | C-ELV-CCTV-365 | 181d | 72d | 183,698.91 | GEN |
| C-ELV-CCTV-385 |  | Installtion & Connection of Racks, Panels etc... at level 11 | 25d | 2016-02-09 | 2016-03-09 | C-ELV-CCTV-375 FF, C-ELV-CCTV-635 SS | 123d | 0d | 7,322.52 |  |
|  | 7 | **Communication System** |  | 2015-07-23 | 2016-05-24 |  |  |  |  |  |
| C-ELV-CS-395 |  | Installation of Cable Trays & Truncking at level 11 | 18d | 2015-07-23 | 2015-08-12 | C-MEP-E-476 SS, C-ELV-CS-645 SS | 146d | 0d | 2,769.38 |  |
| C-ELV-CS-355 |  | Installation of CS first fix (Conduits, Boxes within block work, Gypsum Boards & Raised FLooring at level 11 | 20d | 2015-08-16 | 2015-09-07 | C-F-P-223, C-F-P-213, SD-CS-L11-612, C-ELV-CS-605 SS | 125d | 0d | 27,356.12 | GEN |
| C-ELV-CS-365 |  | Installation of second fix (Cabling & Wirring etc..) at level 11 | 25d | 2015-09-08 | 2015-10-10 | C-ELV-CS-355, C-ELV-CS-395 | 169d | 0d | 82,068.35 | GEN |
| C-ELV-CS-375 |  | Installation & Connection of Wireless Access points & IP dect phone & RJ 45 at level 11 | 25d | 2015-10-11 | 2015-11-08 | C-ELV-CS-365 | 169d | 60d | 93,342.54 | GEN |
| C-ELV-CS-385 |  | Installtion & Connection of Controller & Instrumentation at level 11 | 20d | 2016-05-02 | 2016-05-24 | C-ELV-CS-375, C-ELV-CS-635 | 125d | 0d | 223,314.69 |  |

Notes:
- C-ELV-FA-395: Expenses: 1 2769.38
- C-ELV-FA-355: Expenses: 1 13660.9
- C-ELV-FA-365: Expenses: 1 22768.2
- C-ELV-FA-375: Expenses: 1 27321.8
- C-ELV-FA-385: Expenses: 1 27321.8
- C-ELV-MSPA-395: Expenses: 1 2769.38
- C-ELV-MSPA-355: Expenses: 1 6994.34
- C-ELV-MSPA-365: Expenses: 1 6994.34
- C-ELV-MSPA-375: Expenses: 1 16320.1
- C-ELV-MSPA-385: Expenses: 1 16320.1
- C-ELV-CCTV-355: Expenses: 1 8161.35
- C-ELV-CCTV-395: Expenses: 1 2769.38
- C-ELV-CCTV-365: Expenses: 1 19043.1
- C-ELV-CCTV-375: Expenses: 1 183699
- C-ELV-CCTV-385: Expenses: 1 7322.52
- C-ELV-CS-395: Expenses: 1 2769.38
- C-ELV-CS-355: Expenses: 1 27356.1
- C-ELV-CS-365: Expenses: 1 82068.4
- C-ELV-CS-375: Expenses: 1 93342.5
- C-ELV-CS-385: Expenses: 1 223315

| ID | WBS | Activity | Duration | Start | Finish | Predecessors | Total float | Free float | Cost | AREA |
| --- | --- | --- | --- | --- | --- | --- | --- | --- | --- | --- |
|  | 4 | **IP, SMATV & QAM Television System** |  | 2015-08-16 | 2016-02-03 |  |  |  |  |  |
| C-ELV-SMATV-355 |  | Installation of SMATV first Fix Conduits, Boxes within block work , Gypsum Boards & Raised FLooring at level 11 | 20d | 2015-08-16 | 2015-09-07 | C-F-P-223, C-F-P-213, SD-CS-L11-712, C-ELV-SMATV-605 SS | 136d | 0d | 4,452.18 | GEN |
| C-ELV-SMATV-395 |  | Installation of Cable Trays & Truncking at level 11 | 18d | 2015-08-22 | 2015-09-10 | C-ELV-CCTV-395 SS+5d | 173d | 0d | 2,769.38 |  |
| C-ELV-SMATV-365 |  | Installation of second fix (Cabling & Wirring etc..) at level 11 | 16d | 2015-09-12 | 2015-10-03 | C-ELV-SMATV-355, C-ELV-SMATV-395 | 182d | 0d | 10,388.41 | GEN |
| C-ELV-SMATV-375 |  | Installation & Connection of Outlets, switches and splitter at level 11 | 18d | 2015-10-04 | 2015-10-24 | C-ELV-SMATV-365 | 182d | 67d | 6,537.45 | GEN |
| C-ELV-SMATV-385 |  | Installtion & Connection of SMATV & QAM fiber & receiver at level 11 | 20d | 2016-01-12 | 2016-02-03 | C-ELV-SMATV-375, C-ELV-SMATV-635 | 167d | 0d | 2,419.21 |  |
|  | 5 | **BMS system** |  | 2015-08-16 | 2016-02-11 |  |  |  |  |  |
| C-MEP-BMS-355 |  | Installation of BMS first Fix Conduits, Boxes within block work , Gypsum Boards & Raised FLooring at level 11 | 20d | 2015-08-16 | 2015-09-07 | C-F-P-223, C-F-P-213, SD-CS-L11-592, C-MEP-BMS-605 SS | 119d | 0d | 8,895.95 | GEN |
| C-MEP-BMS-395 |  | Installation of Cable trays & Trunking at level 11 | 20d | 2015-08-27 | 2015-09-19 | C-ELV-SMATV-395 SS+5d | 173d | 0d |  |  |
| C-MEP-BMS-365 |  | Installation of BMS Cabling & Wirring at level 11 | 16d | 2015-09-23 | 2015-10-11 | C-MEP-BMS-355, C-MEP-BMS-395 | 173d | 25d | 11,861.27 | GEN |
| C-MEP-BMS-375 |  | Installation & Connection of BMS Sensors, Relays, & Valves at level 11 | 20d | 2015-11-10 | 2015-12-02 | C-MEP-BMS-365, C-MEP-PD-385, C-MEP-PD-375, C-MEP-FF-294, C-MEP-AC-628, C-MEP-AC-608, C-MEP-AC-618 | 148d | 39d | 14,826.58 | GEN |
| C-MEP-BMS-385 |  | Installtion & Connection of BMS Racks, Panels etc... at level 11 | 20d | 2016-01-19 | 2016-02-11 | C-MEP-BMS-375, C-MEP-BMS-635 SS | 191d | 0d | 14,826.58 |  |
|  | 18 | **MEP - Level 12** |  | 2015-06-20 | 2016-08-01 |  |  |  |  |  |
|  | 1 | **Electrical** |  | 2015-07-08 | 2016-08-01 |  |  |  |  |  |
| C-MEP-E-666 |  | Installation of first Electrical Fix Conduits, Boxes within block work & Gypsum Boards at level 12 | 20d | 2015-07-08 | 2015-08-02 | C-F-P-333, C-MEP-E-186 | 168d | 12d | 55,235.7 | GEN |
| C-MEP-E-716 |  | Installation of Cable Trays & Truncking at level 12 | 18d | 2015-07-27 | 2015-08-16 | C-MEP-FF-444 SS+10d, C-MEP-PD-555 SS+5d, C-MEP-E-236 | 143d | 0d | 21,017.55 |  |
| C-MEP-E-676 |  | Installation of Electrical Second Fix (Cabling & Wirring etc..). at level 12 | 18d | 2015-08-17 | 2015-09-06 | C-MEP-E-666, C-MEP-E-716, C-MEP-E-196 | 164d | 0d | 190,528.33 | GEN |
| C-MEP-E-686 |  | Installation & Connection of Electrical DB's, SMDB's at level 12 | 16d | 2015-09-07 | 2015-09-28 | C-MEP-E-676, C-MEP-E-566 SS | 172d | 28d | 78,921.15 | GEN |
| C-MEP-E-706 |  | Installation & Connection of Lighting Fixtures & Sockets at level 12 | 14d | 2016-07-17 | 2016-08-01 | C-MEP-E-676, C-F-CF-807, C-F-CF-797, C-F-WF-454, C-F-WF-464, C-MEP-E-526, C-F-P-LSF-422 FF | 142d | 0d | 71,857.69 | GEN |
|  | 2 | **HVAC** |  | 2015-06-20 | 2016-07-04 |  |  |  |  |  |
| C-MEP-AC-888 |  | Installation of Ductwork, Insulation & Dampers at level 12 | 23d | 2015-06-20 | 2015-07-18 | C-F-P-333 SS, C-MEP-AC-648, SD-CS-L12-412 | 108d | 0d | 140,612.08 | GEN |
| C-MEP-AC-908 |  | Installation of Chilled Water Pipes & Valves at level 12 | 25d | 2015-07-01 | 2015-08-01 | C-MEP-AC-888 SS+10d, C-MEP-AC-002 | 181d | 47d | 30,741.92 | GEN |
| C-MEP-AC-938 |  | Pressure testing of Ductwork at level 12 | 8d | 2015-08-29 | 2015-09-06 | C-MEP-AC-888, C-MEP-AC-618 | 114d | 0d |  | GEN |
| C-MEP-AC-948 |  | Installation of HVAC equipments AHU's, FCU's, ERU's, VAV's, CAV's & Fans at level 12 | 25d | 2015-09-30 | 2015-10-28 | C-MEP-AC-938 FF, C-MEP-AC-928 FF, C-MEP-AC-888 SS | 131d | 10d | 49,450.17 | GEN |
| C-MEP-AC-898 |  | Installation of Silencers, Attenuators, Isolators & Detectors at level 12 | 12d | 2015-10-04 | 2015-10-17 | C-MEP-AC-938, C-MEP-AC-578 SS | 161d | 0d | 28,274.51 | GEN |
| C-MEP-AC-928 |  | Pressure testing & Insulation of Chilled Water Pipes at level 12 | 12d | 2015-10-15 | 2015-10-28 | C-MEP-AC-908, C-MEP-AC-608 | 120d | 0d | 8,821.1 | GEN |
| C-MEP-AC-918 |  | Installation of Chilled Water Pipes Control Devices & Isolator at level 12 | 8d | 2015-11-05 | 2015-11-14 | C-MEP-AC-928, C-MEP-AC-598 | 121d | 0d | 2,889.38 | GEN |
| C-MEP-AC-958 |  | Installation of Grilles, Diffusers & Controller at level 12 | 12d | 2016-06-21 | 2016-07-04 | C-MEP-AC-948, C-F-CF-807, C-F-CF-797, C-F-WF-464 FF, C-F-CF-797 FF, C-F-WF-454 FF, C-MEP-AC-718 | 143d | 0d | 55,880.87 | GEN |

Notes:
- C-ELV-SMATV-355: Expenses: 1 4452.18
- C-ELV-SMATV-395: Expenses: 1 2769.38
- C-ELV-SMATV-365: Expenses: 1 10388.4
- C-ELV-SMATV-375: Expenses: 1 6537.45
- C-ELV-SMATV-385: Expenses: 1 2419.21
- C-MEP-BMS-355: Expenses: 1 8895.95
- C-MEP-BMS-365: Expenses: 1 11861.3
- C-MEP-BMS-375: Expenses: 1 14826.6
- C-MEP-BMS-385: Expenses: 1 14826.6
- C-MEP-E-666: Expenses: 1 55235.7
- C-MEP-E-716: Expenses: 1 21017.5
- C-MEP-E-676: Expenses: 1 57962.7; 2 132566
- C-MEP-E-686: Expenses: 1 78921.1
- C-MEP-E-706: Expenses: 1 71857.7
- C-MEP-AC-888: Expenses: 1 140612
- C-MEP-AC-908: Expenses: 1 30741.9
- C-MEP-AC-948: Expenses: 1 49450.2
- C-MEP-AC-898: Expenses: 1 28274.5
- C-MEP-AC-928: Expenses: 1 8821.1
- C-MEP-AC-918: Expenses: 1 2889.38
- C-MEP-AC-958: Expenses: 1 55880.9

| ID | WBS | Activity | Duration | Start | Finish | Predecessors | Total float | Free float | Cost | AREA |
| --- | --- | --- | --- | --- | --- | --- | --- | --- | --- | --- |
|  | 3 | **Fire Fighting** |  | 2015-07-01 | 2016-04-11 |  |  |  |  |  |
| C-MEP-FF-444 |  | Installation of FIre fighting Pipes at level 12 | 25d | 2015-07-01 | 2015-08-01 | C-MEP-AC-888 SS+10d, SD-CS-L12-432 | 153d | 10d | 45,406.88 | GEN |
| C-MEP-FF-464 |  | Pressure testing of fire fighting pipes at level 12 | 8d | 2015-09-12 | 2015-09-23 | C-MEP-FF-444, C-MEP-FF-304 | 130d | 0d | 5,280.67 | GEN |
| C-MEP-FF-454 |  | Installation of fire Fighting Valves at level 12 | 20d | 2015-10-18 | 2015-11-09 | C-MEP-FF-464, C-MEP-FF-294 SS | 121d | 0d | 18,427.34 | GEN |
| C-MEP-FF-474 |  | Installation of Fire Fighting Sprinklers & Fire hose Cabinets & Extinguishers at level 12 | 14d | 2016-03-27 | 2016-04-11 | C-MEP-FF-454, C-F-CF-797, C-F-CF-787, C-MEP-FF-464, C-MEP-FF-314 SS | 166d | 0d | 64,097.37 | GEN |
|  | 4 | **Plumbing & Drainage** |  | 2015-07-21 | 2016-06-28 |  |  |  |  |  |
| C-MEP-PD-555 |  | Installation of Water Pipes & Valves (Hot & Cold atc..) at level 12 | 20d | 2015-07-21 | 2015-08-12 | C-MEP-FF-444 SS, C-F-P-343, SD-CS-L12-472 | 143d | 0d | 83,874.06 | GEN |
| C-MEP-PD-565 |  | Installation drainage Pipes at level 12 | 25d | 2015-08-22 | 2015-09-19 | C-MEP-PD-555 SS, C-MEP-PD-365 SS | 149d | 0d | 30,204.4 | GEN |
| C-MEP-PD-575 |  | Pressure testing & Insullation of water pipes at level 12 | 8d | 2015-09-06 | 2015-09-14 | C-MEP-PD-555, C-MEP-PD-375 | 159d | 0d | 9,573.63 | GEN |
| C-MEP-PD-585 |  | Pressure testing of drainage pipes at level 12 | 8d | 2015-09-23 | 2015-10-01 | C-MEP-PD-565 | 154d | 33d | 1,651.42 | GEN |
| C-MEP-PD-595 |  | Installation of Outlets, Drains, Gullies, Cowls, & Clean out at level 12 | 20d | 2016-06-06 | 2016-06-28 | C-MEP-PD-575, C-MEP-PD-575 FF, C-F-FF-454, C-F-WF-454, C-F-FF-454 FF, C-F-WF-474, C-F-WF-454 FF, C-F-DW-454, C-MEP-PD-295, C-F-P-LSF-422 FF | 154d | 0d | 13,120.28 | GEN |
|  | 7 | **ELV systems** |  | 2015-07-27 | 2016-06-16 |  |  |  |  |  |
|  | 1 | **Room Management System** |  | 2015-08-02 | 2016-04-28 |  |  |  |  |  |
| C-ELV-RMS-595 |  | Installation of Cable Trays & Truncking at level 12 | 25d | 2015-08-02 | 2015-08-30 | C-ELV-CS-595 SS+5d | 143d | 0d | 2,769.38 |  |
| C-ELV-RMS-555 |  | Installation of RMS first fix (Conduits, Boxes within block work , Gypsum Boards & Raised FLooring at level 12 | 20d | 2015-08-16 | 2015-09-07 | C-F-P-343, C-F-P-333, SD-CS-L12-652, C-ELV-RMS-355 SS | 123d | 0d | 11,902.78 | GEN |
| C-ELV-RMS-565 |  | Installation of second fix (Cabling & Wirring etc..) at level 12 | 25d | 2015-09-08 | 2015-10-10 | C-ELV-RMS-555, C-ELV-RMS-595 | 142d | 0d | 11,902.78 | GEN |
| C-ELV-RMS-575 |  | Installation & Connection of ethernets & HVAC thermostates etc.. at level 12 | 25d | 2015-10-11 | 2015-11-08 | C-ELV-RMS-565 | 142d | 80d | 27,773.16 | GEN |
| C-ELV-RMS-585 |  | Installtion & Connection of Panels, Controller, switches, server etc..) at level 12 | 20d | 2016-04-06 | 2016-04-28 | C-ELV-RMS-575, C-ELV-RMS-385 | 239d | 134d | 27,773.16 |  |
|  | 12 | **Fire Alarm & Detection System** |  | 2015-08-13 | 2016-03-12 |  |  |  |  |  |
| C-ELV-FA-595 |  | Installation of Cable Trays & Truncking at level 12 | 25d | 2015-08-13 | 2015-09-10 | C-ELV-MSPA-595 SS+5d, SD-CS-L12-692 | 143d | 0d | 2,769.38 |  |
| C-ELV-FA-555 |  | Installation of FA first Fix Conduits, Boxes within block work , Gypsum Boards & Raised FLooring at level 12 | 20d | 2015-08-16 | 2015-09-07 | C-F-P-343, C-F-P-333, C-ELV-FA-355 SS | 125d | 0d | 13,660.92 | GEN |
| C-ELV-FA-565 |  | Installation of second fix (Cabling & Wirring etc..) at level 12 | 20d | 2015-09-12 | 2015-10-07 | C-ELV-FA-555, C-ELV-FA-595 | 144d | 0d | 22,768.2 | GEN |
| C-ELV-FA-575 |  | Installation & Connection of heat detector, smoke detector, flame detector etc.. at level 12 | 25d | 2015-10-08 | 2015-11-05 | C-ELV-FA-565 | 144d | 82d | 27,321.84 | GEN |
| C-ELV-FA-585 |  | Installtion & Connection of Racks & Panels at level 12 | 20d | 2016-02-18 | 2016-03-12 | C-ELV-FA-575, C-ELV-FA-385 SS | 156d | 0d | 27,321.84 |  |

Notes:
- C-MEP-FF-444: Expenses: 1 45406.9
- C-MEP-FF-464: Expenses: 1 5280.67
- C-MEP-FF-454: Expenses: 1 18427.3
- C-MEP-FF-474: Expenses: 1 64097.4
- C-MEP-PD-555: Expenses: 1 83874.1
- C-MEP-PD-565: Expenses: 1 30204.4
- C-MEP-PD-575: Expenses: 1 9573.63
- C-MEP-PD-585: Expenses: 1 1651.42
- C-MEP-PD-595: Expenses: 1 13120.3
- C-ELV-RMS-595: Expenses: 1 2769.38
- C-ELV-RMS-555: Expenses: 1 11902.8
- C-ELV-RMS-565: Expenses: 1 11902.8
- C-ELV-RMS-575: Expenses: 1 27773.2
- C-ELV-RMS-585: Expenses: 1 27773.2
- C-ELV-FA-595: Expenses: 1 2769.38
- C-ELV-FA-555: Expenses: 1 13660.9
- C-ELV-FA-565: Expenses: 1 22768.2
- C-ELV-FA-575: Expenses: 1 27321.8
- C-ELV-FA-585: Expenses: 1 27321.8

| ID | WBS | Activity | Duration | Start | Finish | Predecessors | Total float | Free float | Cost | AREA |
| --- | --- | --- | --- | --- | --- | --- | --- | --- | --- | --- |
|  | 2 | **Music System & Public Address System** |  | 2015-08-08 | 2016-03-29 |  |  |  |  |  |
| C-ELV-MSPA-595 |  | Installation of Cable Trays & Truncking at level 12 | 25d | 2015-08-08 | 2015-09-05 | C-ELV-RMS-595 SS+5d | 143d | 0d | 2,769.38 |  |
| C-ELV-MSPA-555 |  | Installation of MS/PA first fix (Conduits, Boxes within block work, Gypsum Boards & Raised FLooring at level 12 | 20d | 2015-11-21 | 2015-12-13 | C-F-P-343, C-F-P-333, SD-CS-L12-672, C-ELV-MSPA-355 | 62d | 0d | 6,994.34 | GEN |
| C-ELV-MSPA-565 |  | Installation of second fix (Cabling & Wirring etc..) at level 12 | 25d | 2015-12-14 | 2016-01-12 | C-ELV-MSPA-555, C-ELV-MSPA-595 | 62d | 0d | 6,994.34 | GEN |
| C-ELV-MSPA-575 |  | Installation & Connection of speakers, Amplifier & Controller at level 12 | 25d | 2016-01-13 | 2016-02-11 | C-ELV-MSPA-565 | 62d | 0d | 16,320.12 | GEN |
| C-ELV-MSPA-585 |  | Installtion & Connection of Media hub, panels and processor at level 12 | 20d | 2016-03-07 | 2016-03-29 | C-ELV-MSPA-575, C-ELV-MSPA-385 SS | 201d | 0d | 16,320.12 |  |
|  | 3 | **IP CCTV & Access Control System** |  | 2015-08-16 | 2016-03-09 |  |  |  |  |  |
| C-ELV-CCTV-555 |  | Installation of CCTV first Fix Conduits, Boxes within block work, Gypsum Boards & Raised FLooring at level 12 | 20d | 2015-08-16 | 2015-09-07 | C-F-P-343, C-F-P-333, SD-CS-L12-712, C-ELV-CCTV-355 SS | 137d | 0d | 8,161.35 | GEN |
| C-ELV-CCTV-595 |  | Installation of Cable Trays & Truncking at level 12 | 25d | 2015-08-19 | 2015-09-16 | C-ELV-FA-595 SS+5d | 143d | 0d | 2,769.38 |  |
| C-ELV-CCTV-565 |  | Installation of second fix (Cabling & Wirring etc..) at level 12 | 20d | 2015-09-17 | 2015-10-13 | C-ELV-CCTV-555, C-ELV-CCTV-595 | 146d | 0d | 19,043.14 | GEN |
| C-ELV-CCTV-575 |  | Installation & Connection of Camera's & Alarms at level 12 | 18d | 2015-10-14 | 2015-11-03 | C-ELV-CCTV-565 | 146d | 84d | 183,698.91 | GEN |
| C-ELV-CCTV-585 |  | Installtion & Connection of Racks, Panels etc... at level 12 | 25d | 2016-02-09 | 2016-03-09 | C-ELV-CCTV-575 FF, C-ELV-CCTV-385 SS | 123d | 0d | 7,322.52 |  |
|  | 7 | **Communication System** |  | 2015-07-27 | 2016-06-16 |  |  |  |  |  |
| C-ELV-CS-595 |  | Installation of Cable Trays & Truncking at level 12 | 18d | 2015-07-27 | 2015-08-16 | C-MEP-E-716 SS, C-ELV-CS-395 SS | 143d | 0d | 2,769.38 |  |
| C-ELV-CS-555 |  | Installation of CS first fix (Conduits, Boxes within block work, Gypsum Boards & Raised FLooring at level 12 | 20d | 2015-08-16 | 2015-09-07 | C-F-P-343, C-F-P-333, SD-CS-L12-632, C-ELV-CS-355 SS | 125d | 0d | 27,356.12 | GEN |
| C-ELV-CS-565 |  | Installation of second fix (Cabling & Wirring etc..) at level 12 | 25d | 2015-09-08 | 2015-10-10 | C-ELV-CS-555, C-ELV-CS-595 | 142d | 0d | 82,068.35 | GEN |
| C-ELV-CS-575 |  | Installation & Connection of Wireless Access points & IP dect phone & RJ 45 at level 12 | 25d | 2015-10-11 | 2015-11-08 | C-ELV-CS-565 | 142d | 80d | 93,342.54 | GEN |
| C-ELV-CS-585 |  | Installtion & Connection of Controller & Instrumentation at level 12 | 20d | 2016-05-25 | 2016-06-16 | C-ELV-CS-575, C-ELV-CS-385 | 125d | 0d | 223,314.69 |  |
|  | 4 | **IP, SMATV & QAM Television System** |  | 2015-08-16 | 2016-02-03 |  |  |  |  |  |
| C-ELV-SMATV-555 |  | Installation of SMATV first Fix Conduits, Boxes within block work , Gypsum Boards & Raised FLooring at level 12 | 20d | 2015-08-16 | 2015-09-07 | C-F-P-343, C-F-P-333, SD-CS-L12-732, C-ELV-SMATV-355 SS | 136d | 0d | 4,452.18 | GEN |
| C-ELV-SMATV-595 |  | Installation of Cable Trays & Truncking at level 12 | 25d | 2015-08-25 | 2015-09-26 | C-ELV-CCTV-595 SS+5d | 143d | 0d | 2,769.38 |  |
| C-ELV-SMATV-565 |  | Installation of second fix (Cabling & Wirring etc..) at level 12 | 16d | 2015-09-27 | 2015-10-14 | C-ELV-SMATV-555, C-ELV-SMATV-595 | 145d | 0d | 10,388.41 | GEN |
| C-ELV-SMATV-575 |  | Installation & Connection of Outlets, switches and splitter at level 12 | 18d | 2015-10-15 | 2015-11-04 | C-ELV-SMATV-565 | 145d | 57d | 6,537.45 | GEN |
| C-ELV-SMATV-585 |  | Installtion & Connection of SMATV & QAM fiber & receiver at level 12 | 20d | 2016-01-12 | 2016-02-03 | C-ELV-SMATV-575, C-ELV-SMATV-385 SS | 167d | 0d | 2,419.21 |  |

Notes:
- C-ELV-MSPA-595: Expenses: 1 2769.38
- C-ELV-MSPA-555: Expenses: 1 6994.34
- C-ELV-MSPA-565: Expenses: 1 6994.34
- C-ELV-MSPA-575: Expenses: 1 16320.1
- C-ELV-MSPA-585: Expenses: 1 16320.1
- C-ELV-CCTV-555: Expenses: 1 8161.35
- C-ELV-CCTV-595: Expenses: 1 2769.38
- C-ELV-CCTV-565: Expenses: 1 19043.1
- C-ELV-CCTV-575: Expenses: 1 183699
- C-ELV-CCTV-585: Expenses: 1 7322.52
- C-ELV-CS-595: Expenses: 1 2769.38
- C-ELV-CS-555: Expenses: 1 27356.1
- C-ELV-CS-565: Expenses: 1 82068.4
- C-ELV-CS-575: Expenses: 1 93342.5
- C-ELV-CS-585: Expenses: 1 223315
- C-ELV-SMATV-555: Expenses: 1 4452.18
- C-ELV-SMATV-595: Expenses: 1 2769.38
- C-ELV-SMATV-565: Expenses: 1 10388.4
- C-ELV-SMATV-575: Expenses: 1 6537.45
- C-ELV-SMATV-585: Expenses: 1 2419.21

| ID | WBS | Activity | Duration | Start | Finish | Predecessors | Total float | Free float | Cost | AREA |
| --- | --- | --- | --- | --- | --- | --- | --- | --- | --- | --- |
|  | 5 | **BMS system** |  | 2015-08-16 | 2016-03-06 |  |  |  |  |  |
| C-MEP-BMS-555 |  | Installation of BMS first Fix Conduits, Boxes within block work , Gypsum Boards & Raised FLooring at level 12 | 20d | 2015-08-16 | 2015-09-07 | C-F-P-343, C-F-P-333, SD-CS-L12-612, C-MEP-BMS-355 SS | 119d | 0d | 8,895.95 | GEN |
| C-MEP-BMS-595 |  | Installation of Cable trays & Trunking at level 12 | 20d | 2015-08-31 | 2015-09-26 | C-ELV-SMATV-595 SS+5d | 143d | 0d |  |  |
| C-MEP-BMS-565 |  | Installation of BMS Cabling & Wirring at level 12 | 16d | 2015-09-27 | 2015-10-14 | C-MEP-BMS-555, C-MEP-BMS-595 | 143d | 22d | 11,861.27 | GEN |
| C-MEP-BMS-575 |  | Installation & Connection of BMS Sensors, Relays, & Valves at level 12 | 20d | 2015-11-10 | 2015-12-02 | C-MEP-BMS-565, C-MEP-PD-585, C-MEP-PD-575, C-MEP-FF-454, C-MEP-AC-948, C-MEP-AC-928, C-MEP-AC-938 | 121d | 59d | 14,826.58 | GEN |
| C-MEP-BMS-585 |  | Installtion & Connection of BMS Racks, Panels etc... at level 12 | 20d | 2016-02-13 | 2016-03-06 | C-MEP-BMS-575, C-MEP-BMS-385 | 191d | 0d | 14,826.58 |  |
|  | 17 | **MEP - Level 13** |  | 2015-07-06 | 2016-08-17 |  |  |  |  |  |
|  | 1 | **Electrical** |  | 2015-07-25 | 2016-08-17 |  |  |  |  |  |
| C-MEP-E-786 |  | Installation of first Electrical Fix Conduits, Boxes within block work & Gypsum Boards at level 13 | 20d | 2015-07-25 | 2015-08-16 | C-F-P-393, C-MEP-E-306 | 94d | 14d | 55,235.7 | GEN |
| C-MEP-E-836 |  | Installation of Cable Trays & Truncking at level 13 | 18d | 2015-08-12 | 2015-09-01 | C-MEP-FF-524 SS+10d, C-MEP-PD-655 SS+5d, C-MEP-E-356 | 80d | 0d | 21,017.55 |  |
| C-MEP-E-796 |  | Installation of Electrical Second Fix (Cabling & Wirring etc..). at level 13 | 18d | 2015-09-02 | 2015-09-26 | C-MEP-E-786, C-MEP-E-836, C-MEP-E-316 | 80d | 0d | 190,528.33 | GEN |
| C-MEP-E-806 |  | Installation & Connection of Electrical DB's, SMDB's at level 13 | 16d | 2015-09-27 | 2015-10-14 | C-MEP-E-796, C-MEP-E-626 | 80d | 12d | 78,921.15 | GEN |
| C-MEP-E-826 |  | Installation & Connection of Lighting Fixtures & Sockets at level 13 | 14d | 2016-08-02 | 2016-08-17 | C-MEP-E-796, C-F-CF-947, C-F-CF-937, C-F-WF-534, C-F-WF-544, C-MEP-E-886, C-F-P-LSF-432 FF | 118d | 0d | 71,857.69 | GEN |
|  | 2 | **HVAC** |  | 2015-07-06 | 2016-07-04 |  |  |  |  |  |
| C-MEP-AC-1048 |  | Installation of Ductwork, Insulation & Dampers at level 13 | 23d | 2015-07-06 | 2015-08-03 | C-F-P-393 SS, C-MEP-AC-1128, SD-CS-L13-432 | 90d | 0d | 140,612.08 | GEN |
| C-MEP-AC-1068 |  | Installation of Chilled Water Pipes & Valves at level 13 | 25d | 2015-07-20 | 2015-08-17 | C-MEP-AC-1048 SS+10d, C-MEP-AC-268 | 173d | 33d | 30,741.92 | GEN |
| C-MEP-AC-1098 |  | Pressure testing of Ductwork at level 13 | 8d | 2015-09-07 | 2015-09-15 | C-MEP-AC-1048, C-MEP-AC-938 | 114d | 0d |  | GEN |
| C-MEP-AC-1058 |  | Installation of Silencers, Attenuators, Isolators & Detectors at level 13 | 12d | 2015-10-04 | 2015-10-17 | C-MEP-AC-1098, C-MEP-AC-898 SS | 162d | 0d | 28,274.51 | GEN |
| C-MEP-AC-1108 |  | Installation of HVAC equipments AHU's, FCU's, ERU's, VAV's, CAV's & Fans at level 13 | 25d | 2015-10-14 | 2015-11-11 | C-MEP-AC-1098 FF, C-MEP-AC-1088 FF, C-MEP-AC-1048 SS | 120d | 0d | 52,730.55 | GEN |
| C-MEP-AC-1088 |  | Pressure testing & Insulation of Chilled Water Pipes at level 13 | 12d | 2015-10-29 | 2015-11-11 | C-MEP-AC-1068, C-MEP-AC-928 | 120d | 0d | 8,821.1 | GEN |
| C-MEP-AC-1078 |  | Installation of Chilled Water Pipes Control Devices & Isolator at level 13 | 8d | 2015-11-15 | 2015-11-23 | C-MEP-AC-1088, C-MEP-AC-918 | 121d | 0d | 2,889.38 | GEN |
| C-MEP-AC-1118 |  | Installation of Grilles, Diffusers & Controller at level 13 | 12d | 2016-06-21 | 2016-07-04 | C-MEP-AC-1108, C-F-CF-947, C-F-CF-937, C-F-WF-544 FF, C-F-CF-937 FF, C-F-WF-534 FF, C-MEP-AC-1198 | 137d | 0d | 55,880.87 | GEN |
|  | 3 | **Fire Fighting** |  | 2015-07-20 | 2016-04-11 |  |  |  |  |  |
| C-MEP-FF-524 |  | Installation of FIre fighting Pipes at level 13 | 25d | 2015-07-20 | 2015-08-17 | C-MEP-AC-1048 SS+10d, SD-CS-L13-452 | 90d | 10d | 45,406.88 | GEN |
| C-MEP-FF-544 |  | Pressure testing of fire fighting pipes at level 13 | 8d | 2015-09-24 | 2015-10-03 | C-MEP-FF-524, C-MEP-FF-464 | 130d | 0d | 5,280.67 | GEN |
| C-MEP-FF-534 |  | Installation of fire Fighting Valves at level 13 | 20d | 2015-10-18 | 2015-11-09 | C-MEP-FF-544, C-MEP-FF-454 SS | 122d | 2d | 18,427.34 | GEN |
| C-MEP-FF-554 |  | Installation of Fire Fighting Sprinklers & Fire hose Cabinets & Extinguishers at level 13 | 14d | 2016-03-27 | 2016-04-11 | C-MEP-FF-534, C-F-CF-937, C-F-CF-927, C-MEP-FF-544, C-MEP-FF-474 SS | 166d | 0d | 64,097.37 | GEN |

Notes:
- C-MEP-BMS-555: Expenses: 1 8895.95
- C-MEP-BMS-565: Expenses: 1 11861.3
- C-MEP-BMS-575: Expenses: 1 14826.6
- C-MEP-BMS-585: Expenses: 1 14826.6
- C-MEP-E-786: Expenses: 1 55235.7
- C-MEP-E-836: Expenses: 1 21017.5
- C-MEP-E-796: Expenses: 1 57962.7; 2 132566
- C-MEP-E-806: Expenses: 1 78921.1
- C-MEP-E-826: Expenses: 1 71857.7
- C-MEP-AC-1048: Expenses: 1 140612
- C-MEP-AC-1068: Expenses: 1 30741.9
- C-MEP-AC-1058: Expenses: 1 28274.5
- C-MEP-AC-1108: Expenses: 1 52730.6
- C-MEP-AC-1088: Expenses: 1 8821.1
- C-MEP-AC-1078: Expenses: 1 2889.38
- C-MEP-AC-1118: Expenses: 1 55880.9
- C-MEP-FF-524: Expenses: 1 45406.9
- C-MEP-FF-544: Expenses: 1 5280.67
- C-MEP-FF-534: Expenses: 1 18427.3
- C-MEP-FF-554: Expenses: 1 64097.4

| ID | WBS | Activity | Duration | Start | Finish | Predecessors | Total float | Free float | Cost | AREA |
| --- | --- | --- | --- | --- | --- | --- | --- | --- | --- | --- |
|  | 4 | **Plumbing & Drainage** |  | 2015-08-06 | 2016-07-04 |  |  |  |  |  |
| C-MEP-PD-655 |  | Installation of Water Pipes & Valves (Hot & Cold atc..) at level 13 | 20d | 2015-08-06 | 2015-08-29 | C-MEP-FF-524 SS, C-F-P-403, SD-CS-L13-492 | 80d | 0d | 83,874.06 | GEN |
| C-MEP-PD-665 |  | Installation drainage Pipes at level 13 | 25d | 2015-08-22 | 2015-09-19 | C-MEP-PD-655 SS, C-MEP-PD-565 SS | 149d | 0d | 30,204.4 | GEN |
| C-MEP-PD-675 |  | Pressure testing & Insullation of water pipes at level 13 | 8d | 2015-09-15 | 2015-09-27 | C-MEP-PD-655, C-MEP-PD-575 | 159d | 0d | 9,573.63 | GEN |
| C-MEP-PD-685 |  | Pressure testing of drainage pipes at level 13 | 8d | 2015-09-23 | 2015-10-01 | C-MEP-PD-665 | 155d | 35d | 1,651.42 | GEN |
| C-MEP-PD-695 |  | Installation of Outlets, Drains, Gullies, Cowls, & Clean out at level 13 | 20d | 2016-06-12 | 2016-07-04 | C-MEP-PD-675, C-MEP-PD-675 FF, C-F-FF-534, C-F-WF-534, C-F-FF-534 FF, C-F-WF-554, C-F-WF-534 FF, C-F-DW-534, C-MEP-PD-445, C-F-P-LSF-432 FF | 149d | 0d | 13,120.28 | GEN |
|  | 7 | **ELV systems** |  | 2015-08-12 | 2016-07-13 |  |  |  |  |  |
|  | 1 | **Room Management System** |  | 2015-08-18 | 2016-04-05 |  |  |  |  |  |
| C-ELV-RMS-695 |  | Installation of Cable Trays & Truncking at level 13 | 25d | 2015-08-18 | 2015-09-15 | C-ELV-CS-695 SS+5d | 130d | 0d | 2,769.38 |  |
| C-ELV-RMS-655 |  | Installation of RMS first fix (Conduits, Boxes within block work , Gypsum Boards & Raised FLooring at level 13 | 20d | 2015-09-08 | 2015-10-04 | C-F-P-403, C-F-P-393, SD-CS-L13-672, C-ELV-RMS-555 | 123d | 0d | 11,902.78 | GEN |
| C-ELV-RMS-665 |  | Installation of second fix (Cabling & Wirring etc..) at level 13 | 25d | 2015-10-05 | 2015-11-02 | C-ELV-RMS-655, C-ELV-RMS-695 | 123d | 0d | 11,902.78 | GEN |
| C-ELV-RMS-675 |  | Installation & Connection of ethernets & HVAC thermostates etc.. at level 13 | 25d | 2015-11-03 | 2015-12-01 | C-ELV-RMS-665 | 123d | 60d | 27,773.16 | GEN |
| C-ELV-RMS-685 |  | Installtion & Connection of Panels, Controller, switches, server etc..) at level 13 | 20d | 2016-03-14 | 2016-04-05 | C-ELV-RMS-675, C-ELV-RMS-385 SS | 175d | 0d | 27,773.16 |  |
|  | 12 | **Fire Alarm & Detection System** |  | 2015-08-30 | 2016-03-12 |  |  |  |  |  |
| C-ELV-FA-695 |  | Installation of Cable Trays & Truncking at level 13 | 25d | 2015-08-30 | 2015-09-30 | C-ELV-MSPA-695 SS+5d, SD-CS-L13-712 | 130d | 0d | 2,769.38 |  |
| C-ELV-FA-655 |  | Installation of FA first Fix Conduits, Boxes within block work , Gypsum Boards & Raised FLooring at level 13 | 20d | 2015-09-08 | 2015-10-04 | C-F-P-403, C-F-P-393, C-ELV-FA-555 | 125d | 0d | 13,660.92 | GEN |
| C-ELV-FA-665 |  | Installation of second fix (Cabling & Wirring etc..) at level 13 | 20d | 2015-10-05 | 2015-10-27 | C-ELV-FA-655, C-ELV-FA-695 | 128d | 0d | 22,768.2 | GEN |
| C-ELV-FA-675 |  | Installation & Connection of heat detector, smoke detector, flame detector etc.. at level 13 | 25d | 2015-10-28 | 2015-11-25 | C-ELV-FA-665 | 128d | 65d | 27,321.84 | GEN |
| C-ELV-FA-685 |  | Installtion & Connection of Racks & Panels at level 13 | 20d | 2016-02-18 | 2016-03-12 | C-ELV-FA-675, C-ELV-FA-585 SS | 156d | 0d | 27,321.84 |  |
|  | 2 | **Music System & Public Address System** |  | 2015-08-24 | 2016-03-29 |  |  |  |  |  |
| C-ELV-MSPA-695 |  | Installation of Cable Trays & Truncking at level 13 | 25d | 2015-08-24 | 2015-09-24 | C-ELV-RMS-695 SS+5d | 130d | 0d | 2,769.38 |  |
| C-ELV-MSPA-655 |  | Installation of MS/PA first fix (Conduits, Boxes within block work, Gypsum Boards & Raised FLooring at level 13 | 20d | 2015-11-21 | 2015-12-13 | C-F-P-403, C-F-P-393, SD-CS-L13-692, C-ELV-MSPA-555 SS | 63d | 0d | 6,994.34 | GEN |
| C-ELV-MSPA-665 |  | Installation of second fix (Cabling & Wirring etc..) at level 13 | 25d | 2015-12-14 | 2016-01-12 | C-ELV-MSPA-655, C-ELV-MSPA-695 | 63d | 0d | 6,994.34 | GEN |
| C-ELV-MSPA-675 |  | Installation & Connection of speakers, Amplifier & Controller at level 13 | 25d | 2016-01-13 | 2016-02-11 | C-ELV-MSPA-665 | 63d | 0d | 16,320.12 | GEN |
| C-ELV-MSPA-685 |  | Installtion & Connection of Media hub, panels and processor at level 13 | 20d | 2016-03-07 | 2016-03-29 | C-ELV-MSPA-675, C-ELV-MSPA-585 SS | 201d | 0d | 16,320.12 |  |

Notes:
- C-MEP-PD-655: Expenses: 1 83874.1
- C-MEP-PD-665: Expenses: 1 30204.4
- C-MEP-PD-675: Expenses: 1 9573.63
- C-MEP-PD-685: Expenses: 1 1651.42
- C-MEP-PD-695: Expenses: 1 13120.3
- C-ELV-RMS-695: Expenses: 1 2769.38
- C-ELV-RMS-655: Expenses: 1 11902.8
- C-ELV-RMS-665: Expenses: 1 11902.8
- C-ELV-RMS-675: Expenses: 1 27773.2
- C-ELV-RMS-685: Expenses: 1 27773.2
- C-ELV-FA-695: Expenses: 1 2769.38
- C-ELV-FA-655: Expenses: 1 13660.9
- C-ELV-FA-665: Expenses: 1 22768.2
- C-ELV-FA-675: Expenses: 1 27321.8
- C-ELV-FA-685: Expenses: 1 27321.8
- C-ELV-MSPA-695: Expenses: 1 2769.38
- C-ELV-MSPA-655: Expenses: 1 6994.34
- C-ELV-MSPA-665: Expenses: 1 6994.34
- C-ELV-MSPA-675: Expenses: 1 16320.1
- C-ELV-MSPA-685: Expenses: 1 16320.1

| ID | WBS | Activity | Duration | Start | Finish | Predecessors | Total float | Free float | Cost | AREA |
| --- | --- | --- | --- | --- | --- | --- | --- | --- | --- | --- |
|  | 3 | **IP CCTV & Access Control System** |  | 2015-08-16 | 2016-03-09 |  |  |  |  |  |
| C-ELV-CCTV-655 |  | Installation of CCTV first Fix Conduits, Boxes within block work, Gypsum Boards & Raised FLooring at level 13 | 20d | 2015-08-16 | 2015-09-07 | C-F-P-403, C-F-P-393, SD-CS-L13-732, C-ELV-CCTV-555 SS | 137d | 0d | 8,161.35 | GEN |
| C-ELV-CCTV-695 |  | Installation of Cable Trays & Truncking at level 13 | 25d | 2015-09-05 | 2015-10-06 | C-ELV-FA-695 SS+5d | 130d | 0d | 2,769.38 |  |
| C-ELV-CCTV-665 |  | Installation of second fix (Cabling & Wirring etc..) at level 13 | 20d | 2015-10-07 | 2015-10-29 | C-ELV-CCTV-655, C-ELV-CCTV-695 | 133d | 0d | 19,043.14 | GEN |
| C-ELV-CCTV-675 |  | Installation & Connection of Camera's & Alarms at level 13 | 18d | 2015-10-31 | 2015-11-19 | C-ELV-CCTV-665 | 133d | 70d | 183,698.91 | GEN |
| C-ELV-CCTV-685 |  | Installtion & Connection of Racks, Panels etc... at level 13 | 25d | 2016-02-09 | 2016-03-09 | C-ELV-CCTV-675 FF, C-ELV-CCTV-585 SS | 123d | 0d | 7,322.52 |  |
|  | 7 | **Communication System** |  | 2015-08-12 | 2016-07-13 |  |  |  |  |  |
| C-ELV-CS-695 |  | Installation of Cable Trays & Truncking at level 13 | 18d | 2015-08-12 | 2015-09-01 | C-MEP-E-836 SS, C-ELV-CS-595 SS | 130d | 0d | 2,769.38 |  |
| C-ELV-CS-655 |  | Installation of CS first fix (Conduits, Boxes within block work, Gypsum Boards & Raised FLooring at level 13 | 20d | 2015-08-16 | 2015-09-07 | C-F-P-403, C-F-P-393, SD-CS-L13-652, C-ELV-CS-555 SS | 125d | 0d | 27,356.12 | GEN |
| C-ELV-CS-665 |  | Installation of second fix (Cabling & Wirring etc..) at level 13 | 25d | 2015-09-08 | 2015-10-10 | C-ELV-CS-655, C-ELV-CS-695 | 143d | 0d | 82,068.35 | GEN |
| C-ELV-CS-675 |  | Installation & Connection of Wireless Access points & IP dect phone & RJ 45 at level 13 | 25d | 2015-10-11 | 2015-11-08 | C-ELV-CS-665 | 143d | 80d | 93,342.54 | GEN |
| C-ELV-CS-685 |  | Installtion & Connection of Controller & Instrumentation at level 13 | 20d | 2016-06-18 | 2016-07-13 | C-ELV-CS-675, C-ELV-CS-585 | 125d | 0d | 223,314.69 |  |
|  | 4 | **IP, SMATV & QAM Television System** |  | 2015-09-08 | 2016-02-03 |  |  |  |  |  |
| C-ELV-SMATV-655 |  | Installation of SMATV first Fix Conduits, Boxes within block work , Gypsum Boards & Raised FLooring at level 13 | 20d | 2015-09-08 | 2015-10-04 | C-F-P-403, C-F-P-393, SD-CS-L13-752, C-ELV-SMATV-555 | 136d | 0d | 4,452.18 | GEN |
| C-ELV-SMATV-695 |  | Installation of Cable Trays & Truncking at level 13 | 25d | 2015-09-10 | 2015-10-12 | C-ELV-CCTV-695 SS+5d | 130d | 0d | 2,769.38 |  |
| C-ELV-SMATV-665 |  | Installation of second fix (Cabling & Wirring etc..) at level 13 | 16d | 2015-10-13 | 2015-10-31 | C-ELV-SMATV-655, C-ELV-SMATV-695 | 132d | 0d | 10,388.41 | GEN |
| C-ELV-SMATV-675 |  | Installation & Connection of Outlets, switches and splitter at level 13 | 18d | 2015-11-01 | 2015-11-21 | C-ELV-SMATV-665 | 132d | 43d | 6,537.45 | GEN |
| C-ELV-SMATV-685 |  | Installtion & Connection of SMATV & QAM fiber & receiver at level 13 | 20d | 2016-01-12 | 2016-02-03 | C-ELV-SMATV-675, C-ELV-SMATV-585 SS | 167d | 0d | 2,419.21 |  |
|  | 5 | **BMS system** |  | 2015-09-08 | 2016-03-06 |  |  |  |  |  |
| C-MEP-BMS-655 |  | Installation of BMS first Fix Conduits, Boxes within block work , Gypsum Boards & Raised FLooring at level 13 | 20d | 2015-09-08 | 2015-10-04 | C-F-P-403, C-F-P-393, SD-CS-L13-632, C-MEP-BMS-555 | 119d | 0d | 8,895.95 | GEN |
| C-MEP-BMS-695 |  | Installation of Cable trays & Trunking at level 13 | 20d | 2015-09-16 | 2015-10-12 | C-ELV-SMATV-695 SS+5d | 130d | 0d |  |  |
| C-MEP-BMS-665 |  | Installation of BMS Cabling & Wirring at level 13 | 16d | 2015-10-13 | 2015-10-31 | C-MEP-BMS-655, C-MEP-BMS-695 | 130d | 10d | 11,861.27 | GEN |
| C-MEP-BMS-675 |  | Installation & Connection of BMS Sensors, Relays, & Valves at level 13 | 20d | 2015-11-12 | 2015-12-05 | C-MEP-BMS-665, C-MEP-PD-685, C-MEP-PD-675, C-MEP-FF-534, C-MEP-AC-1108, C-MEP-AC-1088, C-MEP-AC-1098 | 120d | 57d | 14,826.58 | GEN |
| C-MEP-BMS-685 |  | Installtion & Connection of BMS Racks, Panels etc... at level 13 | 20d | 2016-02-13 | 2016-03-06 | C-MEP-BMS-675, C-MEP-BMS-585 SS | 191d | 0d | 14,826.58 |  |

Notes:
- C-ELV-CCTV-655: Expenses: 1 8161.35
- C-ELV-CCTV-695: Expenses: 1 2769.38
- C-ELV-CCTV-665: Expenses: 1 19043.1
- C-ELV-CCTV-675: Expenses: 1 183699
- C-ELV-CCTV-685: Expenses: 1 7322.52
- C-ELV-CS-695: Expenses: 1 2769.38
- C-ELV-CS-655: Expenses: 1 27356.1
- C-ELV-CS-665: Expenses: 1 82068.4
- C-ELV-CS-675: Expenses: 1 93342.5
- C-ELV-CS-685: Expenses: 1 223315
- C-ELV-SMATV-655: Expenses: 1 4452.18
- C-ELV-SMATV-695: Expenses: 1 2769.38
- C-ELV-SMATV-665: Expenses: 1 10388.4
- C-ELV-SMATV-675: Expenses: 1 6537.45
- C-ELV-SMATV-685: Expenses: 1 2419.21
- C-MEP-BMS-655: Expenses: 1 8895.95
- C-MEP-BMS-665: Expenses: 1 11861.3
- C-MEP-BMS-675: Expenses: 1 14826.6
- C-MEP-BMS-685: Expenses: 1 14826.6

| ID | WBS | Activity | Duration | Start | Finish | Predecessors | Total float | Free float | Cost | AREA |
| --- | --- | --- | --- | --- | --- | --- | --- | --- | --- | --- |
|  | 16 | **MEP - Level 14** |  | 2015-07-06 | 2016-09-03 |  |  |  |  |  |
|  | 1 | **Electrical** |  | 2015-08-03 | 2016-09-03 |  |  |  |  |  |
| C-MEP-E-966 |  | Installation of first Electrical Fix Conduits, Boxes within block work & Gypsum Boards at level 14 | 20d | 2015-08-03 | 2015-08-25 | C-F-P-483, C-MEP-E-486 | 116d | 6d | 55,235.7 | GEN |
| C-MEP-E-1016 |  | Installation of Cable Trays & Truncking at level 14 | 18d | 2015-08-12 | 2015-09-01 | C-MEP-FF-644 SS+10d, C-MEP-PD-805 SS+5d, C-MEP-E-536 | 110d | 0d | 21,017.55 |  |
| C-MEP-E-976 |  | Installation of Electrical Second Fix (Cabling & Wirring etc..). at level 14 | 18d | 2015-09-02 | 2015-09-26 | C-MEP-E-966, C-MEP-E-1016, C-MEP-E-496 | 110d | 6d | 190,528.33 | GEN |
| C-MEP-E-986 |  | Installation & Connection of Electrical DB's, SMDB's at level 14 | 16d | 2015-10-04 | 2015-10-21 | C-MEP-E-976, C-MEP-E-746 | 104d | 8d | 78,921.15 | GEN |
| C-MEP-E-1006 |  | Installation & Connection of Lighting Fixtures & Sockets at level 14 | 14d | 2016-08-18 | 2016-09-03 | C-MEP-E-976, C-F-CF-1157, C-F-CF-1147, C-F-WF-654, C-F-WF-664, C-MEP-E-586, C-F-P-LSF-442 FF | 114d | 0d | 71,857.69 | GEN |
|  | 2 | **HVAC** |  | 2015-07-06 | 2016-07-04 |  |  |  |  |  |
| C-MEP-AC-1288 |  | Installation of Ductwork, Insulation & Dampers at level 14 | 23d | 2015-07-06 | 2015-08-03 | C-F-P-483 SS, C-MEP-AC-728, SD-CS-L14-452 | 113d | 0d | 140,612.08 | GEN |
| C-MEP-AC-1308 |  | Installation of Chilled Water Pipes & Valves at level 14 | 25d | 2015-07-20 | 2015-08-17 | C-MEP-AC-1288 SS+10d, C-MEP-AC-428 | 182d | 0d | 30,741.92 | GEN |
| C-MEP-AC-1328 |  | Pressure testing & Insulation of Chilled Water Pipes at level 14 | 12d | 2015-08-18 | 2015-08-31 | C-MEP-AC-1308 | 188d | 21d | 8,821.1 | GEN |
| C-MEP-AC-1348 |  | Installation of HVAC equipments AHU's, FCU's, ERU's, VAV's, CAV's & Fans at level 14 | 25d | 2015-08-27 | 2015-09-28 | C-MEP-AC-1338 FF, C-MEP-AC-1328 FF, C-MEP-AC-1288 SS | 167d | 32d | 52,293.17 | GEN |
| C-MEP-AC-1338 |  | Pressure testing of Ductwork at level 14 | 8d | 2015-09-16 | 2015-09-28 | C-MEP-AC-1288, C-MEP-AC-1098 | 114d | 0d |  | GEN |
| C-MEP-AC-1298 |  | Installation of Silencers, Attenuators, Isolators & Detectors at level 14 | 12d | 2015-10-04 | 2015-10-17 | C-MEP-AC-1338, C-MEP-AC-1058 SS | 171d | 4d | 28,274.51 | GEN |
| C-MEP-AC-1318 |  | Installation of Chilled Water Pipes Control Devices & Isolator at level 14 | 8d | 2015-11-24 | 2015-12-02 | C-MEP-AC-1328, C-MEP-AC-1078 | 121d | 0d | 2,889.38 | GEN |
| C-MEP-AC-1358 |  | Installation of Grilles, Diffusers & Controller at level 14 | 12d | 2016-06-21 | 2016-07-04 | C-MEP-AC-1348, C-F-CF-1157, C-F-CF-1147, C-F-WF-664 FF, C-F-CF-1147 FF, C-F-WF-654 FF, C-MEP-AC-798 | 137d | 8d | 55,880.87 | GEN |
|  | 3 | **Fire Fighting** |  | 2015-07-20 | 2016-04-11 |  |  |  |  |  |
| C-MEP-FF-644 |  | Installation of FIre fighting Pipes at level 14 | 25d | 2015-07-20 | 2015-08-17 | C-MEP-AC-1288 SS+10d, SD-CS-L14-472 | 120d | 10d | 45,406.88 | GEN |
| C-MEP-FF-664 |  | Pressure testing of fire fighting pipes at level 14 | 8d | 2015-10-04 | 2015-10-12 | C-MEP-FF-644, C-MEP-FF-544 | 130d | 0d | 5,280.67 | GEN |
| C-MEP-FF-654 |  | Installation of fire Fighting Valves at level 14 | 20d | 2015-10-13 | 2015-11-04 | C-MEP-FF-664 | 135d | 0d | 18,427.34 | GEN |
| C-MEP-FF-674 |  | Installation of Fire Fighting Sprinklers & Fire hose Cabinets & Extinguishers at level 14 | 14d | 2016-03-27 | 2016-04-11 | C-MEP-FF-654, C-F-CF-1147, C-F-CF-1137, C-MEP-FF-664, C-MEP-FF-554 SS | 177d | 0d | 64,097.37 | GEN |
|  | 4 | **Plumbing & Drainage** |  | 2015-08-06 | 2016-06-28 |  |  |  |  |  |
| C-MEP-PD-805 |  | Installation of Water Pipes & Valves (Hot & Cold atc..) at level 14 | 20d | 2015-08-06 | 2015-08-29 | C-MEP-FF-644 SS, C-F-P-493, SD-CS-L14-512 | 110d | 0d | 83,874.06 | GEN |
| C-MEP-PD-815 |  | Installation drainage Pipes at level 14 | 25d | 2015-08-22 | 2015-09-19 | C-MEP-PD-805 SS, C-MEP-PD-665 SS | 149d | 0d | 30,204.4 | GEN |
| C-MEP-PD-825 |  | Pressure testing & Insullation of water pipes at level 14 | 8d | 2015-09-15 | 2015-09-27 | C-MEP-PD-805, C-MEP-PD-675 SS | 168d | 0d | 9,573.63 | GEN |
| C-MEP-PD-835 |  | Pressure testing of drainage pipes at level 14 | 8d | 2015-09-23 | 2015-10-01 | C-MEP-PD-815 | 164d | 29d | 1,651.42 | GEN |
| C-MEP-PD-845 |  | Installation of Outlets, Drains, Gullies, Cowls, & Clean out at level 14 | 20d | 2016-06-06 | 2016-06-28 | C-MEP-PD-825, C-MEP-PD-825 FF, C-F-FF-654, C-F-WF-654, C-F-FF-654 FF, C-F-WF-674, C-F-WF-654 FF, C-F-DW-654, C-MEP-PD-745, C-F-P-LSF-442 FF | 154d | 0d | 13,120.28 | GEN |

Notes:
- C-MEP-E-966: Expenses: 1 55235.7
- C-MEP-E-1016: Expenses: 1 21017.5
- C-MEP-E-976: Expenses: 1 57962.7; 2 132566
- C-MEP-E-986: Expenses: 1 78921.1
- C-MEP-E-1006: Expenses: 1 71857.7
- C-MEP-AC-1288: Expenses: 1 140612
- C-MEP-AC-1308: Expenses: 1 30741.9
- C-MEP-AC-1328: Expenses: 1 8821.1
- C-MEP-AC-1348: Expenses: 1 52293.2
- C-MEP-AC-1298: Expenses: 1 28274.5
- C-MEP-AC-1318: Expenses: 1 2889.38
- C-MEP-AC-1358: Expenses: 1 55880.9
- C-MEP-FF-644: Expenses: 1 45406.9
- C-MEP-FF-664: Expenses: 1 5280.67
- C-MEP-FF-654: Expenses: 1 18427.3
- C-MEP-FF-674: Expenses: 1 64097.4
- C-MEP-PD-805: Expenses: 1 83874.1
- C-MEP-PD-815: Expenses: 1 30204.4
- C-MEP-PD-825: Expenses: 1 9573.63
- C-MEP-PD-835: Expenses: 1 1651.42
- C-MEP-PD-845: Expenses: 1 13120.3

| ID | WBS | Activity | Duration | Start | Finish | Predecessors | Total float | Free float | Cost | AREA |
| --- | --- | --- | --- | --- | --- | --- | --- | --- | --- | --- |
|  | 7 | **ELV systems** |  | 2015-08-12 | 2016-08-06 |  |  |  |  |  |
|  | 1 | **Room Management System** |  | 2015-08-18 | 2016-04-05 |  |  |  |  |  |
| C-ELV-RMS-845 |  | Installation of Cable Trays & Truncking at level 14 | 25d | 2015-08-18 | 2015-09-15 | C-ELV-CS-845 SS+5d | 139d | 0d | 2,769.38 |  |
| C-ELV-RMS-805 |  | Installation of RMS first fix (Conduits, Boxes within block work , Gypsum Boards & Raised FLooring at level 14 | 20d | 2015-09-08 | 2015-10-04 | C-F-P-493, C-F-P-483, SD-CS-L14-692, C-ELV-RMS-655 SS | 125d | 0d | 11,902.78 | GEN |
| C-ELV-RMS-815 |  | Installation of second fix (Cabling & Wirring etc..) at level 14 | 25d | 2015-10-05 | 2015-11-02 | C-ELV-RMS-805, C-ELV-RMS-845 | 132d | 0d | 11,902.78 | GEN |
| C-ELV-RMS-825 |  | Installation & Connection of ethernets & HVAC thermostates etc.. at level 14 | 25d | 2015-11-03 | 2015-12-01 | C-ELV-RMS-815 | 132d | 60d | 27,773.16 | GEN |
| C-ELV-RMS-835 |  | Installtion & Connection of Panels, Controller, switches, server etc..) at level 14 | 20d | 2016-03-14 | 2016-04-05 | C-ELV-RMS-825, C-ELV-RMS-685 SS | 175d | 0d | 27,773.16 |  |
|  | 12 | **Fire Alarm & Detection System** |  | 2015-08-30 | 2016-03-12 |  |  |  |  |  |
| C-ELV-FA-845 |  | Installation of Cable Trays & Truncking at level 14 | 25d | 2015-08-30 | 2015-09-30 | C-ELV-MSPA-845 SS+5d, SD-CS-L14-732 | 139d | 0d | 2,769.38 |  |
| C-ELV-FA-805 |  | Installation of FA first Fix Conduits, Boxes within block work , Gypsum Boards & Raised FLooring at level 14 | 20d | 2015-09-08 | 2015-10-04 | C-F-P-493, C-F-P-483, C-ELV-FA-655 SS | 125d | 0d | 13,660.92 | GEN |
| C-ELV-FA-815 |  | Installation of second fix (Cabling & Wirring etc..) at level 14 | 20d | 2015-10-05 | 2015-10-27 | C-ELV-FA-805, C-ELV-FA-845 | 137d | 0d | 22,768.2 | GEN |
| C-ELV-FA-825 |  | Installation & Connection of heat detector, smoke detector, flame detector etc.. at level 14 | 25d | 2015-10-28 | 2015-11-25 | C-ELV-FA-815 | 137d | 65d | 27,321.84 | GEN |
| C-ELV-FA-835 |  | Installtion & Connection of Racks & Panels at level 14 | 20d | 2016-02-18 | 2016-03-12 | C-ELV-FA-825, C-ELV-FA-685 SS | 156d | 0d | 27,321.84 |  |
|  | 2 | **Music System & Public Address System** |  | 2015-08-24 | 2016-03-29 |  |  |  |  |  |
| C-ELV-MSPA-845 |  | Installation of Cable Trays & Truncking at level 14 | 25d | 2015-08-24 | 2015-09-24 | C-ELV-RMS-845 SS+5d | 139d | 0d | 2,769.38 |  |
| C-ELV-MSPA-805 |  | Installation of MS/PA first fix (Conduits, Boxes within block work, Gypsum Boards & Raised FLooring at level 14 | 20d | 2015-11-21 | 2015-12-13 | C-F-P-493, C-F-P-483, SD-CS-L14-712, C-ELV-MSPA-655 SS | 65d | 0d | 6,994.34 | GEN |
| C-ELV-MSPA-815 |  | Installation of second fix (Cabling & Wirring etc..) at level 14 | 25d | 2015-12-14 | 2016-01-12 | C-ELV-MSPA-805, C-ELV-MSPA-845 | 72d | 0d | 6,994.34 | GEN |
| C-ELV-MSPA-825 |  | Installation & Connection of speakers, Amplifier & Controller at level 14 | 25d | 2016-01-13 | 2016-02-11 | C-ELV-MSPA-815 | 72d | 0d | 16,320.12 | GEN |
| C-ELV-MSPA-835 |  | Installtion & Connection of Media hub, panels and processor at level 14 | 20d | 2016-03-07 | 2016-03-29 | C-ELV-MSPA-825, C-ELV-MSPA-685 SS | 201d | 0d | 16,320.12 |  |
|  | 3 | **IP CCTV & Access Control System** |  | 2015-08-16 | 2016-03-09 |  |  |  |  |  |
| C-ELV-CCTV-805 |  | Installation of CCTV first Fix Conduits, Boxes within block work, Gypsum Boards & Raised FLooring at level 14 | 20d | 2015-08-16 | 2015-09-07 | C-F-P-493, C-F-P-483, SD-CS-L14-752, C-ELV-CCTV-655 SS | 137d | 6d | 8,161.35 | GEN |
| C-ELV-CCTV-845 |  | Installation of Cable Trays & Truncking at level 14 | 25d | 2015-09-05 | 2015-10-06 | C-ELV-FA-845 SS+5d | 139d | 0d | 2,769.38 |  |
| C-ELV-CCTV-815 |  | Installation of second fix (Cabling & Wirring etc..) at level 14 | 20d | 2015-10-07 | 2015-10-29 | C-ELV-CCTV-805, C-ELV-CCTV-845 | 142d | 0d | 19,043.14 | GEN |
| C-ELV-CCTV-825 |  | Installation & Connection of Camera's & Alarms at level 14 | 18d | 2015-10-31 | 2015-11-19 | C-ELV-CCTV-815 | 142d | 70d | 183,698.91 | GEN |
| C-ELV-CCTV-835 |  | Installtion & Connection of Racks, Panels etc... at level 14 | 25d | 2016-02-09 | 2016-03-09 | C-ELV-CCTV-825 FF, C-ELV-CCTV-685 SS | 123d | 0d | 7,322.52 |  |

Notes:
- C-ELV-RMS-845: Expenses: 1 2769.38
- C-ELV-RMS-805: Expenses: 1 11902.8
- C-ELV-RMS-815: Expenses: 1 11902.8
- C-ELV-RMS-825: Expenses: 1 27773.2
- C-ELV-RMS-835: Expenses: 1 27773.2
- C-ELV-FA-845: Expenses: 1 2769.38
- C-ELV-FA-805: Expenses: 1 13660.9
- C-ELV-FA-815: Expenses: 1 22768.2
- C-ELV-FA-825: Expenses: 1 27321.8
- C-ELV-FA-835: Expenses: 1 27321.8
- C-ELV-MSPA-845: Expenses: 1 2769.38
- C-ELV-MSPA-805: Expenses: 1 6994.34
- C-ELV-MSPA-815: Expenses: 1 6994.34
- C-ELV-MSPA-825: Expenses: 1 16320.1
- C-ELV-MSPA-835: Expenses: 1 16320.1
- C-ELV-CCTV-805: Expenses: 1 8161.35
- C-ELV-CCTV-845: Expenses: 1 2769.38
- C-ELV-CCTV-815: Expenses: 1 19043.1
- C-ELV-CCTV-825: Expenses: 1 183699
- C-ELV-CCTV-835: Expenses: 1 7322.52

| ID | WBS | Activity | Duration | Start | Finish | Predecessors | Total float | Free float | Cost | AREA |
| --- | --- | --- | --- | --- | --- | --- | --- | --- | --- | --- |
|  | 7 | **Communication System** |  | 2015-08-12 | 2016-08-06 |  |  |  |  |  |
| C-ELV-CS-845 |  | Installation of Cable Trays & Truncking at level 14 | 18d | 2015-08-12 | 2015-09-01 | C-MEP-E-1016 SS, C-ELV-CS-695 SS | 139d | 0d | 2,769.38 |  |
| C-ELV-CS-805 |  | Installation of CS first fix (Conduits, Boxes within block work, Gypsum Boards & Raised FLooring at level 14 | 20d | 2015-08-16 | 2015-09-07 | C-F-P-493, C-F-P-483, SD-CS-L14-672, C-ELV-CS-655 SS | 125d | 0d | 27,356.12 | GEN |
| C-ELV-CS-815 |  | Installation of second fix (Cabling & Wirring etc..) at level 14 | 25d | 2015-09-08 | 2015-10-10 | C-ELV-CS-805, C-ELV-CS-845 | 152d | 0d | 82,068.35 | GEN |
| C-ELV-CS-825 |  | Installation & Connection of Wireless Access points & IP dect phone & RJ 45 at level 14 | 25d | 2015-10-11 | 2015-11-08 | C-ELV-CS-815 | 152d | 80d | 93,342.54 | GEN |
| C-ELV-CS-835 |  | Installtion & Connection of Controller & Instrumentation at level 14 | 20d | 2016-07-14 | 2016-08-06 | C-ELV-CS-825, C-ELV-CS-685 | 125d | 0d | 223,314.69 |  |
|  | 4 | **IP, SMATV & QAM Television System** |  | 2015-09-08 | 2016-02-03 |  |  |  |  |  |
| C-ELV-SMATV-805 |  | Installation of SMATV first Fix Conduits, Boxes within block work , Gypsum Boards & Raised FLooring at level 14 | 20d | 2015-09-08 | 2015-10-04 | C-F-P-493, C-F-P-483, SD-CS-L14-772, C-ELV-SMATV-655 SS | 136d | 0d | 4,452.18 | GEN |
| C-ELV-SMATV-845 |  | Installation of Cable Trays & Truncking at level 14 | 25d | 2015-09-10 | 2015-10-12 | C-ELV-CCTV-845 SS+5d | 139d | 0d | 2,769.38 |  |
| C-ELV-SMATV-815 |  | Installation of second fix (Cabling & Wirring etc..) at level 14 | 16d | 2015-10-13 | 2015-10-31 | C-ELV-SMATV-805, C-ELV-SMATV-845 | 141d | 0d | 10,388.41 | GEN |
| C-ELV-SMATV-825 |  | Installation & Connection of Outlets, switches and splitter at level 14 | 18d | 2015-11-01 | 2015-11-21 | C-ELV-SMATV-815 | 141d | 43d | 6,537.45 | GEN |
| C-ELV-SMATV-835 |  | Installtion & Connection of SMATV & QAM fiber & receiver at level 14 | 20d | 2016-01-12 | 2016-02-03 | C-ELV-SMATV-825, C-ELV-SMATV-685 SS | 167d | 0d | 2,419.21 |  |
|  | 5 | **BMS system** |  | 2015-09-08 | 2016-03-06 |  |  |  |  |  |
| C-MEP-BMS-805 |  | Installation of BMS first Fix Conduits, Boxes within block work , Gypsum Boards & Raised FLooring at level 14 | 20d | 2015-09-08 | 2015-10-04 | C-F-P-493, C-F-P-483, SD-CS-L14-652, C-MEP-BMS-655 SS | 119d | 0d | 8,895.95 | GEN |
| C-MEP-BMS-845 |  | Installation of Cable trays & Trunking at level 14 | 20d | 2015-09-16 | 2015-10-12 | C-ELV-SMATV-845 SS+5d | 139d | 0d |  |  |
| C-MEP-BMS-815 |  | Installation of BMS Cabling & Wirring at level 14 | 16d | 2015-10-13 | 2015-10-31 | C-MEP-BMS-805, C-MEP-BMS-845 | 139d | 4d | 11,861.27 | GEN |
| C-MEP-BMS-825 |  | Installation & Connection of BMS Sensors, Relays, & Valves at level 14 | 20d | 2015-11-05 | 2015-11-28 | C-MEP-BMS-815, C-MEP-PD-835, C-MEP-PD-825, C-MEP-FF-654, C-MEP-AC-1348, C-MEP-AC-1328, C-MEP-AC-1338 | 135d | 63d | 14,826.58 | GEN |
| C-MEP-BMS-835 |  | Installtion & Connection of BMS Racks, Panels etc... at level 14 | 20d | 2016-02-13 | 2016-03-06 | C-MEP-BMS-825, C-MEP-BMS-685 SS | 191d | 0d | 14,826.58 |  |
|  | 15 | **MEP - Level 15** |  | 2015-07-25 | 2016-09-22 |  |  |  |  |  |
|  | 1 | **Electrical** |  | 2015-08-26 | 2016-09-22 |  |  |  |  |  |
| C-MEP-E-1326 |  | Installation of first Electrical Fix Conduits, Boxes within block work & Gypsum Boards at level 15 | 20d | 2015-08-26 | 2015-09-17 | C-F-P-663, C-MEP-E-846 | 128d | 0d | 55,235.7 | GEN |
| C-MEP-E-1376 |  | Installation of Cable Trays & Truncking at level 15 | 18d | 2015-08-29 | 2015-09-17 | C-MEP-FF-884 SS+10d, C-MEP-PD-1105 SS+5d, C-MEP-E-896 | 122d | 0d | 21,017.55 |  |
| C-MEP-E-1336 |  | Installation of Electrical Second Fix (Cabling & Wirring etc..). at level 15 | 18d | 2015-09-19 | 2015-10-12 | C-MEP-E-1326, C-MEP-E-1376, C-MEP-E-856 | 136d | 0d | 190,528.33 | GEN |
| C-MEP-E-1346 |  | Installation & Connection of Electrical DB's, SMDB's at level 15 | 16d | 2015-10-13 | 2015-10-31 | C-MEP-E-1336, C-MEP-E-866, C-MEP-E-446 | 144d | 7d | 78,921.15 | GEN |
| C-MEP-E-1366 |  | Installation & Connection of Lighting Fixtures & Sockets at level 15 | 14d | 2016-09-04 | 2016-09-22 | C-MEP-E-1336, C-F-CF-1577, C-F-CF-1567, C-F-WF-894, C-F-WF-904, C-MEP-E-646, C-F-P-LSF-452 FF | 100d | 0d | 71,857.69 | GEN |

Notes:
- C-ELV-CS-845: Expenses: 1 2769.38
- C-ELV-CS-805: Expenses: 1 27356.1
- C-ELV-CS-815: Expenses: 1 82068.4
- C-ELV-CS-825: Expenses: 1 93342.5
- C-ELV-CS-835: Expenses: 1 223315
- C-ELV-SMATV-805: Expenses: 1 4452.18
- C-ELV-SMATV-845: Expenses: 1 2769.38
- C-ELV-SMATV-815: Expenses: 1 10388.4
- C-ELV-SMATV-825: Expenses: 1 6537.45
- C-ELV-SMATV-835: Expenses: 1 2419.21
- C-MEP-BMS-805: Expenses: 1 8895.95
- C-MEP-BMS-815: Expenses: 1 11861.3
- C-MEP-BMS-825: Expenses: 1 14826.6
- C-MEP-BMS-835: Expenses: 1 14826.6
- C-MEP-E-1326: Expenses: 1 55235.7
- C-MEP-E-1376: Expenses: 1 21017.5
- C-MEP-E-1336: Expenses: 1 57962.7; 2 132566
- C-MEP-E-1346: Expenses: 1 78921.1
- C-MEP-E-1366: Expenses: 1 71857.7

| ID | WBS | Activity | Duration | Start | Finish | Predecessors | Total float | Free float | Cost | AREA |
| --- | --- | --- | --- | --- | --- | --- | --- | --- | --- | --- |
|  | 2 | **HVAC** |  | 2015-07-25 | 2016-07-04 |  |  |  |  |  |
| C-MEP-AC-1768 |  | Installation of Ductwork, Insulation & Dampers at level 15 | 23d | 2015-07-25 | 2015-08-19 | C-F-P-663 SS, C-MEP-AC-808 SS, SD-CS-L15-472 | 108d | 0d | 140,612.08 | GEN |
| C-MEP-AC-1788 |  | Installation of Chilled Water Pipes & Valves at level 15 | 25d | 2015-08-05 | 2015-09-02 | C-MEP-AC-1768 SS+10d, C-MEP-AC-668 | 157d | 0d | 30,741.92 | GEN |
| C-MEP-AC-1808 |  | Pressure testing & Insulation of Chilled Water Pipes at level 15 | 12d | 2015-09-03 | 2015-09-16 | C-MEP-AC-1788 | 182d | 15d | 8,821.1 | GEN |
| C-MEP-AC-1828 |  | Installation of HVAC equipments AHU's, FCU's, ERU's, VAV's, CAV's & Fans at level 15 | 25d | 2015-09-06 | 2015-10-07 | C-MEP-AC-1818 FF, C-MEP-AC-1808 FF, C-MEP-AC-1768 SS | 167d | 34d | 52,074.47 | GEN |
| C-MEP-AC-1818 |  | Pressure testing of Ductwork at level 15 | 8d | 2015-09-29 | 2015-10-07 | C-MEP-AC-1768, C-MEP-AC-1338 | 114d | 0d |  | GEN |
| C-MEP-AC-1778 |  | Installation of Silencers, Attenuators, Isolators & Detectors at level 15 | 12d | 2015-10-08 | 2015-10-21 | C-MEP-AC-1818, C-MEP-AC-1298 SS | 175d | 8d | 28,274.51 | GEN |
| C-MEP-AC-1798 |  | Installation of Chilled Water Pipes Control Devices & Isolator at level 15 | 8d | 2015-12-03 | 2015-12-12 | C-MEP-AC-1808, C-MEP-AC-1318 | 121d | 0d | 2,889.38 | GEN |
| C-MEP-AC-1838 |  | Installation of Grilles, Diffusers & Controller at level 15 | 12d | 2016-06-21 | 2016-07-04 | C-MEP-AC-1828, C-F-CF-1577, C-F-CF-1567, C-F-WF-904 FF, C-F-CF-1567 FF, C-F-WF-894 FF, C-MEP-AC-878 | 137d | 8d | 55,880.87 | GEN |
|  | 3 | **Fire Fighting** |  | 2015-08-05 | 2016-04-11 |  |  |  |  |  |
| C-MEP-FF-884 |  | Installation of FIre fighting Pipes at level 15 | 25d | 2015-08-05 | 2015-09-02 | C-MEP-AC-1768 SS+10d, SD-CS-L15-492 | 132d | 10d | 45,406.88 | GEN |
| C-MEP-FF-904 |  | Pressure testing of fire fighting pipes at level 15 | 8d | 2015-10-13 | 2015-10-21 | C-MEP-FF-884, C-MEP-FF-664 | 130d | 0d | 5,280.67 | GEN |
| C-MEP-FF-894 |  | Installation of fire Fighting Valves at level 15 | 20d | 2015-10-22 | 2015-11-14 | C-MEP-FF-904 | 135d | 2d | 18,427.34 | GEN |
| C-MEP-FF-914 |  | Installation of Fire Fighting Sprinklers & Fire hose Cabinets & Extinguishers at level 15 | 14d | 2016-03-27 | 2016-04-11 | C-MEP-FF-894, C-F-CF-1567, C-F-CF-1557, C-MEP-FF-904, C-MEP-FF-674 SS | 177d | 0d | 64,097.37 | GEN |
|  | 4 | **Plumbing & Drainage** |  | 2015-08-23 | 2016-06-28 |  |  |  |  |  |
| C-MEP-PD-1105 |  | Installation of Water Pipes & Valves (Hot & Cold atc..) at level 15 | 20d | 2015-08-23 | 2015-09-14 | C-MEP-FF-884 SS, C-F-P-673, SD-CS-L15-532 | 122d | 0d | 83,874.06 | GEN |
| C-MEP-PD-1115 |  | Installation drainage Pipes at level 15 | 25d | 2015-08-23 | 2015-09-23 | C-MEP-PD-1105 SS, C-MEP-PD-815 SS | 148d | 0d | 30,204.4 | GEN |
| C-MEP-PD-1125 |  | Pressure testing & Insullation of water pipes at level 15 | 8d | 2015-09-15 | 2015-09-27 | C-MEP-PD-1105, C-MEP-PD-825 SS | 176d | 0d | 9,573.63 | GEN |
| C-MEP-PD-1135 |  | Pressure testing of drainage pipes at level 15 | 8d | 2015-09-24 | 2015-10-03 | C-MEP-PD-1115 | 171d | 38d | 1,651.42 | GEN |
| C-MEP-PD-1145 |  | Installation of Outlets, Drains, Gullies, Cowls, & Clean out at level 15 | 20d | 2016-06-06 | 2016-06-28 | C-MEP-PD-1125, C-MEP-PD-1125 FF, C-F-FF-894, C-F-WF-894, C-F-FF-894 FF, C-F-WF-914, C-F-WF-894 FF, C-F-DW-894, C-MEP-PD-495, C-F-P-LSF-452 FF | 144d | 7d | 13,120.28 | GEN |
|  | 7 | **ELV systems** |  | 2015-08-23 | 2016-08-06 |  |  |  |  |  |
|  | 1 | **Room Management System** |  | 2015-09-03 | 2016-04-28 |  |  |  |  |  |
| C-ELV-RMS-1145 |  | Installation of Cable Trays & Truncking at level 15 | 25d | 2015-09-03 | 2015-10-05 | C-ELV-CS-1145 SS+5d | 133d | 0d | 2,769.38 |  |
| C-ELV-RMS-1105 |  | Installation of RMS first fix (Conduits, Boxes within block work , Gypsum Boards & Raised FLooring at level 15 | 20d | 2015-09-08 | 2015-10-04 | C-F-P-673, C-F-P-663, SD-CS-L15-712, C-ELV-RMS-805 SS | 125d | 0d | 11,902.78 | GEN |
| C-ELV-RMS-1115 |  | Installation of second fix (Cabling & Wirring etc..) at level 15 | 25d | 2015-10-06 | 2015-11-03 | C-ELV-RMS-1105, C-ELV-RMS-1145 | 139d | 0d | 11,902.78 | GEN |
| C-ELV-RMS-1125 |  | Installation & Connection of ethernets & HVAC thermostates etc.. at level 15 | 25d | 2015-11-04 | 2015-12-02 | C-ELV-RMS-1115 | 139d | 59d | 27,773.16 | GEN |
| C-ELV-RMS-1135 |  | Installtion & Connection of Panels, Controller, switches, server etc..) at level 15 | 20d | 2016-04-06 | 2016-04-28 | C-ELV-RMS-1125, C-ELV-RMS-835 | 175d | 0d | 27,773.16 |  |

Notes:
- C-MEP-AC-1768: Expenses: 1 140612
- C-MEP-AC-1788: Expenses: 1 30741.9
- C-MEP-AC-1808: Expenses: 1 8821.1
- C-MEP-AC-1828: Expenses: 1 52074.5
- C-MEP-AC-1778: Expenses: 1 28274.5
- C-MEP-AC-1798: Expenses: 1 2889.38
- C-MEP-AC-1838: Expenses: 1 55880.9
- C-MEP-FF-884: Expenses: 1 45406.9
- C-MEP-FF-904: Expenses: 1 5280.67
- C-MEP-FF-894: Expenses: 1 18427.3
- C-MEP-FF-914: Expenses: 1 64097.4
- C-MEP-PD-1105: Expenses: 1 83874.1
- C-MEP-PD-1115: Expenses: 1 30204.4
- C-MEP-PD-1125: Expenses: 1 9573.63
- C-MEP-PD-1135: Expenses: 1 1651.42
- C-MEP-PD-1145: Expenses: 1 13120.3
- C-ELV-RMS-1145: Expenses: 1 2769.38
- C-ELV-RMS-1105: Expenses: 1 11902.8
- C-ELV-RMS-1115: Expenses: 1 11902.8
- C-ELV-RMS-1125: Expenses: 1 27773.2
- C-ELV-RMS-1135: Expenses: 1 27773.2

| ID | WBS | Activity | Duration | Start | Finish | Predecessors | Total float | Free float | Cost | AREA |
| --- | --- | --- | --- | --- | --- | --- | --- | --- | --- | --- |
|  | 12 | **Fire Alarm & Detection System** |  | 2015-09-08 | 2016-04-04 |  |  |  |  |  |
| C-ELV-FA-1105 |  | Installation of FA first Fix Conduits, Boxes within block work , Gypsum Boards & Raised FLooring at level 15 | 20d | 2015-09-08 | 2015-10-04 | C-F-P-673, C-F-P-663, C-ELV-FA-805 SS | 125d | 0d | 13,660.92 | GEN |
| C-ELV-FA-1145 |  | Installation of Cable Trays & Truncking at level 15 | 25d | 2015-09-15 | 2015-10-17 | C-ELV-MSPA-1145 SS+5d, SD-CS-L15-752 | 133d | 0d | 2,769.38 |  |
| C-ELV-FA-1115 |  | Installation of second fix (Cabling & Wirring etc..) at level 15 | 20d | 2015-10-18 | 2015-11-09 | C-ELV-FA-1105, C-ELV-FA-1145 | 134d | 0d | 22,768.2 | GEN |
| C-ELV-FA-1125 |  | Installation & Connection of heat detector, smoke detector, flame detector etc.. at level 15 | 25d | 2015-11-10 | 2015-12-08 | C-ELV-FA-1115 | 134d | 54d | 27,321.84 | GEN |
| C-ELV-FA-1135 |  | Installtion & Connection of Racks & Panels at level 15 | 20d | 2016-03-13 | 2016-04-04 | C-ELV-FA-1125, C-ELV-FA-835 | 156d | 0d | 27,321.84 |  |
|  | 2 | **Music System & Public Address System** |  | 2015-09-09 | 2016-03-29 |  |  |  |  |  |
| C-ELV-MSPA-1145 |  | Installation of Cable Trays & Truncking at level 15 | 25d | 2015-09-09 | 2015-10-11 | C-ELV-RMS-1145 SS+5d | 133d | 0d | 2,769.38 |  |
| C-ELV-MSPA-1105 |  | Installation of MS/PA first fix (Conduits, Boxes within block work, Gypsum Boards & Raised FLooring at level 15 | 20d | 2015-11-21 | 2015-12-13 | C-F-P-673, C-F-P-663, SD-CS-L15-732, C-ELV-MSPA-805 SS | 65d | 0d | 6,994.34 | GEN |
| C-ELV-MSPA-1115 |  | Installation of second fix (Cabling & Wirring etc..) at level 15 | 25d | 2015-12-14 | 2016-01-12 | C-ELV-MSPA-1105, C-ELV-MSPA-1145 | 80d | 0d | 6,994.34 | GEN |
| C-ELV-MSPA-1125 |  | Installation & Connection of speakers, Amplifier & Controller at level 15 | 25d | 2016-01-13 | 2016-02-11 | C-ELV-MSPA-1115 | 80d | 0d | 16,320.12 | GEN |
| C-ELV-MSPA-1135 |  | Installtion & Connection of Media hub, panels and processor at level 15 | 20d | 2016-03-07 | 2016-03-29 | C-ELV-MSPA-1125, C-ELV-MSPA-835 SS | 201d | 0d | 16,320.12 |  |
|  | 3 | **IP CCTV & Access Control System** |  | 2015-08-23 | 2016-04-07 |  |  |  |  |  |
| C-ELV-CCTV-1105 |  | Installation of CCTV first Fix Conduits, Boxes within block work, Gypsum Boards & Raised FLooring at level 15 | 20d | 2015-08-23 | 2015-09-14 | C-F-P-673, C-F-P-663, SD-CS-L15-772, C-ELV-CCTV-805 SS | 131d | 0d | 8,161.35 | GEN |
| C-ELV-CCTV-1145 |  | Installation of Cable Trays & Truncking at level 15 | 25d | 2015-09-24 | 2015-10-22 | C-ELV-FA-1145 SS+5d | 133d | 0d | 2,769.38 |  |
| C-ELV-CCTV-1115 |  | Installation of second fix (Cabling & Wirring etc..) at level 15 | 20d | 2015-10-24 | 2015-11-15 | C-ELV-CCTV-1105, C-ELV-CCTV-1145 | 136d | 0d | 19,043.14 | GEN |
| C-ELV-CCTV-1125 |  | Installation & Connection of Camera's & Alarms at level 15 | 18d | 2015-11-16 | 2015-12-06 | C-ELV-CCTV-1115 | 136d | 56d | 183,698.91 | GEN |
| C-ELV-CCTV-1135 |  | Installtion & Connection of Racks, Panels etc... at level 15 | 25d | 2016-03-10 | 2016-04-07 | C-ELV-CCTV-1125 FF, C-ELV-CCTV-835 | 123d | 0d | 7,322.52 |  |
|  | 7 | **Communication System** |  | 2015-08-23 | 2016-08-06 |  |  |  |  |  |
| C-ELV-CS-1105 |  | Installation of CS first fix (Conduits, Boxes within block work, Gypsum Boards & Raised FLooring at level 15 | 20d | 2015-08-23 | 2015-09-14 | C-F-P-673, C-F-P-663, SD-CS-L15-692, C-ELV-CS-805 SS | 119d | 0d | 27,356.12 | GEN |
| C-ELV-CS-1145 |  | Installation of Cable Trays & Truncking at level 15 | 18d | 2015-08-29 | 2015-09-17 | C-MEP-E-1376 SS, C-ELV-CS-845 SS | 133d | 0d | 2,769.38 |  |
| C-ELV-CS-1115 |  | Installation of second fix (Cabling & Wirring etc..) at level 15 | 25d | 2015-09-19 | 2015-10-20 | C-ELV-CS-1105, C-ELV-CS-1145 | 151d | 0d | 82,068.35 | GEN |
| C-ELV-CS-1125 |  | Installation & Connection of Wireless Access points & IP dect phone & RJ 45 at level 15 | 25d | 2015-10-21 | 2015-11-18 | C-ELV-CS-1115 | 151d | 71d | 93,342.54 | GEN |
| C-ELV-CS-1135 |  | Installtion & Connection of Controller & Instrumentation at level 15 | 20d | 2016-07-14 | 2016-08-06 | C-ELV-CS-1125, C-ELV-CS-835 SS | 125d | 0d | 223,314.69 |  |

Notes:
- C-ELV-FA-1105: Expenses: 1 13660.9
- C-ELV-FA-1145: Expenses: 1 2769.38
- C-ELV-FA-1115: Expenses: 1 22768.2
- C-ELV-FA-1125: Expenses: 1 27321.8
- C-ELV-FA-1135: Expenses: 1 27321.8
- C-ELV-MSPA-1145: Expenses: 1 2769.38
- C-ELV-MSPA-1105: Expenses: 1 6994.34
- C-ELV-MSPA-1115: Expenses: 1 6994.34
- C-ELV-MSPA-1125: Expenses: 1 16320.1
- C-ELV-MSPA-1135: Expenses: 1 16320.1
- C-ELV-CCTV-1105: Expenses: 1 8161.35
- C-ELV-CCTV-1145: Expenses: 1 2769.38
- C-ELV-CCTV-1115: Expenses: 1 19043.1
- C-ELV-CCTV-1125: Expenses: 1 183699
- C-ELV-CCTV-1135: Expenses: 1 7322.52
- C-ELV-CS-1105: Expenses: 1 27356.1
- C-ELV-CS-1145: Expenses: 1 2769.38
- C-ELV-CS-1115: Expenses: 1 82068.4
- C-ELV-CS-1125: Expenses: 1 93342.5
- C-ELV-CS-1135: Expenses: 1 223315

| ID | WBS | Activity | Duration | Start | Finish | Predecessors | Total float | Free float | Cost | AREA |
| --- | --- | --- | --- | --- | --- | --- | --- | --- | --- | --- |
|  | 4 | **IP, SMATV & QAM Television System** |  | 2015-09-08 | 2016-02-28 |  |  |  |  |  |
| C-ELV-SMATV-1105 |  | Installation of SMATV first Fix Conduits, Boxes within block work , Gypsum Boards & Raised FLooring at level 15 | 20d | 2015-09-08 | 2015-10-04 | C-F-P-673, C-F-P-663, SD-CS-L15-792, C-ELV-SMATV-805 SS | 136d | 0d | 4,452.18 | GEN |
| C-ELV-SMATV-1145 |  | Installation of Cable Trays & Truncking at level 15 | 25d | 2015-09-30 | 2015-10-28 | C-ELV-CCTV-1145 SS+5d | 133d | 0d | 2,769.38 |  |
| C-ELV-SMATV-1115 |  | Installation of second fix (Cabling & Wirring etc..) at level 15 | 16d | 2015-10-29 | 2015-11-16 | C-ELV-SMATV-1105, C-ELV-SMATV-1145 | 135d | 0d | 10,388.41 | GEN |
| C-ELV-SMATV-1125 |  | Installation & Connection of Outlets, switches and splitter at level 15 | 18d | 2015-11-17 | 2015-12-07 | C-ELV-SMATV-1115 | 135d | 49d | 6,537.45 | GEN |
| C-ELV-SMATV-1135 |  | Installtion & Connection of SMATV & QAM fiber & receiver at level 15 | 20d | 2016-02-04 | 2016-02-28 | C-ELV-SMATV-1125, C-ELV-SMATV-835 | 167d | 0d | 2,419.21 |  |
|  | 5 | **BMS system** |  | 2015-09-08 | 2016-03-06 |  |  |  |  |  |
| C-MEP-BMS-1105 |  | Installation of BMS first Fix Conduits, Boxes within block work , Gypsum Boards & Raised FLooring at level 15 | 20d | 2015-09-08 | 2015-10-04 | C-F-P-673, C-F-P-663, SD-CS-L15-672, C-MEP-BMS-805 SS | 119d | 0d | 8,895.95 | GEN |
| C-MEP-BMS-1145 |  | Installation of Cable trays & Trunking at level 15 | 20d | 2015-10-06 | 2015-10-28 | C-ELV-SMATV-1145 SS+5d | 133d | 0d |  |  |
| C-MEP-BMS-1115 |  | Installation of BMS Cabling & Wirring at level 15 | 16d | 2015-10-29 | 2015-11-16 | C-MEP-BMS-1105, C-MEP-BMS-1145 | 133d | 0d | 11,861.27 | GEN |
| C-MEP-BMS-1125 |  | Installation & Connection of BMS Sensors, Relays, & Valves at level 15 | 20d | 2015-11-17 | 2015-12-09 | C-MEP-BMS-1115, C-MEP-PD-1135, C-MEP-PD-1125, C-MEP-FF-894, C-MEP-AC-1828, C-MEP-AC-1808, C-MEP-AC-1818 | 133d | 53d | 14,826.58 | GEN |
| C-MEP-BMS-1135 |  | Installtion & Connection of BMS Racks, Panels etc... at level 15 | 20d | 2016-02-13 | 2016-03-06 | C-MEP-BMS-1125, C-MEP-BMS-835 SS | 191d | 0d | 14,826.58 |  |
|  | 14 | **MEP - Level 16** |  | 2015-07-25 | 2016-10-10 |  |  |  |  |  |
|  | 1 | **Electrical** |  | 2015-08-10 | 2016-10-10 |  |  |  |  |  |
| C-MEP-E-1086 |  | Installation of first Electrical Fix Conduits, Boxes within block work & Gypsum Boards at level 16 | 20d | 2015-08-10 | 2015-09-01 | C-F-P-543, C-MEP-E-546 | 142d | 14d | 55,235.7 | GEN |
| C-MEP-E-1136 |  | Installation of Cable Trays & Truncking at level 16 | 18d | 2015-08-29 | 2015-09-17 | C-MEP-FF-724 SS+10d, C-MEP-PD-905 SS+5d, C-MEP-E-596 | 122d | 0d | 21,017.55 |  |
| C-MEP-E-1096 |  | Installation of Electrical Second Fix (Cabling & Wirring etc..). at level 16 | 18d | 2015-09-19 | 2015-10-12 | C-MEP-E-1086, C-MEP-E-1136, C-MEP-E-556 | 136d | 0d | 190,528.33 | GEN |
| C-MEP-E-1106 |  | Installation & Connection of Electrical DB's, SMDB's at level 16 | 16d | 2015-10-13 | 2015-10-31 | C-MEP-E-1096, C-MEP-E-566 SS, C-MEP-E-686 SS | 160d | 30d | 78,921.15 | GEN |
| C-MEP-E-1126 |  | Installation & Connection of Lighting Fixtures & Sockets at level 16 | 14d | 2016-09-25 | 2016-10-10 | C-MEP-E-1096, C-F-CF-1297, C-F-CF-1287, C-F-WF-734, C-F-WF-744, C-MEP-E-766, C-F-P-LSF-462 FF | 90d | 0d | 71,857.69 | GEN |
|  | 2 | **HVAC** |  | 2015-07-25 | 2016-07-04 |  |  |  |  |  |
| C-MEP-AC-1448 |  | Installation of Ductwork, Insulation & Dampers at level 16 | 23d | 2015-07-25 | 2015-08-19 | C-F-P-543 SS, C-MEP-AC-968, SD-CS-L16-492 | 108d | 0d | 140,612.08 | GEN |
| C-MEP-AC-1468 |  | Installation of Chilled Water Pipes & Valves at level 16 | 25d | 2015-08-05 | 2015-09-02 | C-MEP-AC-1448 SS+10d, C-MEP-AC-1148 | 167d | 0d | 30,741.92 | GEN |
| C-MEP-AC-1488 |  | Pressure testing & Insulation of Chilled Water Pipes at level 16 | 12d | 2015-09-03 | 2015-09-16 | C-MEP-AC-1468 | 185d | 23d | 8,821.1 | GEN |
| C-MEP-AC-1508 |  | Installation of HVAC equipments AHU's, FCU's, ERU's, VAV's, CAV's & Fans at level 16 | 25d | 2015-09-15 | 2015-10-17 | C-MEP-AC-1498 FF, C-MEP-AC-1488 FF, C-MEP-AC-1448 SS | 162d | 32d | 50,543.64 | GEN |
| C-MEP-AC-1498 |  | Pressure testing of Ductwork at level 16 | 8d | 2015-10-08 | 2015-10-17 | C-MEP-AC-1448, C-MEP-AC-1818 | 114d | 0d |  | GEN |
| C-MEP-AC-1458 |  | Installation of Silencers, Attenuators, Isolators & Detectors at level 16 | 12d | 2015-10-18 | 2015-10-31 | C-MEP-AC-1498, C-MEP-AC-1778 SS | 170d | 8d | 28,274.51 | GEN |
| C-MEP-AC-1478 |  | Installation of Chilled Water Pipes Control Devices & Isolator at level 16 | 8d | 2015-12-13 | 2015-12-22 | C-MEP-AC-1488, C-MEP-AC-1798 | 121d | 0d | 2,889.38 | GEN |
| C-MEP-AC-1518 |  | Installation of Grilles, Diffusers & Controller at level 16 | 12d | 2016-06-21 | 2016-07-04 | C-MEP-AC-1508, C-F-CF-1297, C-F-CF-1287, C-F-WF-744 FF, C-F-CF-1287 FF, C-F-WF-734 FF, C-MEP-AC-1038 | 149d | 15d | 55,880.87 | GEN |

Notes:
- C-ELV-SMATV-1105: Expenses: 1 4452.18
- C-ELV-SMATV-1145: Expenses: 1 2769.38
- C-ELV-SMATV-1115: Expenses: 1 10388.4
- C-ELV-SMATV-1125: Expenses: 1 6537.45
- C-ELV-SMATV-1135: Expenses: 1 2419.21
- C-MEP-BMS-1105: Expenses: 1 8895.95
- C-MEP-BMS-1115: Expenses: 1 11861.3
- C-MEP-BMS-1125: Expenses: 1 14826.6
- C-MEP-BMS-1135: Expenses: 1 14826.6
- C-MEP-E-1086: Expenses: 1 55235.7
- C-MEP-E-1136: Expenses: 1 21017.5
- C-MEP-E-1096: Expenses: 1 57962.7; 2 132566
- C-MEP-E-1106: Expenses: 1 78921.1
- C-MEP-E-1126: Expenses: 1 71857.7
- C-MEP-AC-1448: Expenses: 1 140612
- C-MEP-AC-1468: Expenses: 1 30741.9
- C-MEP-AC-1488: Expenses: 1 8821.1
- C-MEP-AC-1508: Expenses: 1 50543.6
- C-MEP-AC-1458: Expenses: 1 28274.5
- C-MEP-AC-1478: Expenses: 1 2889.38
- C-MEP-AC-1518: Expenses: 1 55880.9

| ID | WBS | Activity | Duration | Start | Finish | Predecessors | Total float | Free float | Cost | AREA |
| --- | --- | --- | --- | --- | --- | --- | --- | --- | --- | --- |
|  | 3 | **Fire Fighting** |  | 2015-08-05 | 2016-04-11 |  |  |  |  |  |
| C-MEP-FF-724 |  | Installation of FIre fighting Pipes at level 16 | 25d | 2015-08-05 | 2015-09-02 | C-MEP-AC-1448 SS+10d, SD-CS-L16-512 | 132d | 10d | 45,406.88 | GEN |
| C-MEP-FF-744 |  | Pressure testing of fire fighting pipes at level 16 | 8d | 2015-10-22 | 2015-10-31 | C-MEP-FF-724, C-MEP-FF-904 | 130d | 0d | 5,280.67 | GEN |
| C-MEP-FF-734 |  | Installation of fire Fighting Valves at level 16 | 20d | 2015-11-01 | 2015-11-23 | C-MEP-FF-744 | 130d | 0d | 18,427.34 | GEN |
| C-MEP-FF-754 |  | Installation of Fire Fighting Sprinklers & Fire hose Cabinets & Extinguishers at level 16 | 14d | 2016-03-27 | 2016-04-11 | C-MEP-FF-734, C-F-CF-1287, C-F-CF-1277, C-MEP-FF-744, C-MEP-FF-914 SS | 177d | 0d | 64,097.37 | GEN |
|  | 4 | **Plumbing & Drainage** |  | 2015-08-23 | 2016-06-28 |  |  |  |  |  |
| C-MEP-PD-905 |  | Installation of Water Pipes & Valves (Hot & Cold atc..) at level 16 | 20d | 2015-08-23 | 2015-09-14 | C-MEP-FF-724 SS, C-F-P-553, SD-CS-L16-552 | 122d | 0d | 83,874.06 | GEN |
| C-MEP-PD-915 |  | Installation drainage Pipes at level 16 | 25d | 2015-08-23 | 2015-09-23 | C-MEP-PD-905 SS, C-MEP-PD-1115 SS | 148d | 0d | 30,204.4 | GEN |
| C-MEP-PD-925 |  | Pressure testing & Insullation of water pipes at level 16 | 8d | 2015-09-15 | 2015-09-27 | C-MEP-PD-905, C-MEP-PD-1125 SS | 179d | 14d | 9,573.63 | GEN |
| C-MEP-PD-935 |  | Pressure testing of drainage pipes at level 16 | 8d | 2015-09-24 | 2015-10-03 | C-MEP-PD-915 | 174d | 44d | 1,651.42 | GEN |
| C-MEP-PD-945 |  | Installation of Outlets, Drains, Gullies, Cowls, & Clean out at level 16 | 20d | 2016-06-06 | 2016-06-28 | C-MEP-PD-925, C-MEP-PD-925 FF, C-F-FF-734, C-F-WF-734, C-F-FF-734 FF, C-F-WF-754, C-F-WF-734 FF, C-F-DW-734, C-MEP-PD-545, C-F-P-LSF-462 FF | 154d | 15d | 13,120.28 | GEN |
|  | 7 | **ELV systems** |  | 2015-08-23 | 2016-08-06 |  |  |  |  |  |
|  | 1 | **Room Management System** |  | 2015-09-03 | 2016-04-28 |  |  |  |  |  |
| C-ELV-RMS-945 |  | Installation of Cable Trays & Truncking at level 16 | 25d | 2015-09-03 | 2015-10-05 | C-ELV-CS-945 SS+5d | 136d | 0d | 2,769.38 |  |
| C-ELV-RMS-905 |  | Installation of RMS first fix (Conduits, Boxes within block work , Gypsum Boards & Raised FLooring at level 16 | 20d | 2015-09-08 | 2015-10-04 | C-F-P-553, C-F-P-543, SD-CS-L16-732, C-ELV-RMS-1105 SS | 125d | 0d | 11,902.78 | GEN |
| C-ELV-RMS-915 |  | Installation of second fix (Cabling & Wirring etc..) at level 16 | 25d | 2015-10-06 | 2015-11-03 | C-ELV-RMS-905, C-ELV-RMS-945 | 142d | 0d | 11,902.78 | GEN |
| C-ELV-RMS-925 |  | Installation & Connection of ethernets & HVAC thermostates etc.. at level 16 | 25d | 2015-11-04 | 2015-12-02 | C-ELV-RMS-915 | 142d | 59d | 27,773.16 | GEN |
| C-ELV-RMS-935 |  | Installtion & Connection of Panels, Controller, switches, server etc..) at level 16 | 20d | 2016-04-06 | 2016-04-28 | C-ELV-RMS-925, C-ELV-RMS-1135 SS | 175d | 0d | 27,773.16 |  |
|  | 12 | **Fire Alarm & Detection System** |  | 2015-09-08 | 2016-04-27 |  |  |  |  |  |
| C-ELV-FA-905 |  | Installation of FA first Fix Conduits, Boxes within block work , Gypsum Boards & Raised FLooring at level 16 | 20d | 2015-09-08 | 2015-10-04 | C-F-P-553, C-F-P-543, SD-CS-L16-792, C-ELV-FA-1105 SS | 125d | 0d | 13,660.92 | GEN |
| C-ELV-FA-945 |  | Installation of Cable Trays & Truncking at level 16 | 25d | 2015-09-15 | 2015-10-17 | C-ELV-MSPA-945 SS+5d, SD-CS-L16-772 | 136d | 0d | 2,769.38 |  |
| C-ELV-FA-915 |  | Installation of second fix (Cabling & Wirring etc..) at level 16 | 20d | 2015-10-18 | 2015-11-09 | C-ELV-FA-905, C-ELV-FA-945 | 137d | 0d | 22,768.2 | GEN |
| C-ELV-FA-925 |  | Installation & Connection of heat detector, smoke detector, flame detector etc.. at level 16 | 25d | 2015-11-10 | 2015-12-08 | C-ELV-FA-915 | 137d | 54d | 27,321.84 | GEN |
| C-ELV-FA-935 |  | Installtion & Connection of Racks & Panels at level 16 | 20d | 2016-04-05 | 2016-04-27 | C-ELV-FA-925, C-ELV-FA-835, C-ELV-FA-1135 | 156d | 0d | 27,321.84 |  |

Notes:
- C-MEP-FF-724: Expenses: 1 45406.9
- C-MEP-FF-744: Expenses: 1 5280.67
- C-MEP-FF-734: Expenses: 1 18427.3
- C-MEP-FF-754: Expenses: 1 64097.4
- C-MEP-PD-905: Expenses: 1 83874.1
- C-MEP-PD-915: Expenses: 1 30204.4
- C-MEP-PD-925: Expenses: 1 9573.63
- C-MEP-PD-935: Expenses: 1 1651.42
- C-MEP-PD-945: Expenses: 1 13120.3
- C-ELV-RMS-945: Expenses: 1 2769.38
- C-ELV-RMS-905: Expenses: 1 11902.8
- C-ELV-RMS-915: Expenses: 1 11902.8
- C-ELV-RMS-925: Expenses: 1 27773.2
- C-ELV-RMS-935: Expenses: 1 27773.2
- C-ELV-FA-905: Expenses: 1 13660.9
- C-ELV-FA-945: Expenses: 1 2769.38
- C-ELV-FA-915: Expenses: 1 22768.2
- C-ELV-FA-925: Expenses: 1 27321.8
- C-ELV-FA-935: Expenses: 1 27321.8

| ID | WBS | Activity | Duration | Start | Finish | Predecessors | Total float | Free float | Cost | AREA |
| --- | --- | --- | --- | --- | --- | --- | --- | --- | --- | --- |
|  | 2 | **Music System & Public Address System** |  | 2015-09-09 | 2016-03-29 |  |  |  |  |  |
| C-ELV-MSPA-945 |  | Installation of Cable Trays & Truncking at level 16 | 25d | 2015-09-09 | 2015-10-11 | C-ELV-RMS-945 SS+5d | 136d | 0d | 2,769.38 |  |
| C-ELV-MSPA-905 |  | Installation of MS/PA first fix (Conduits, Boxes within block work, Gypsum Boards & Raised FLooring at level 16 | 20d | 2015-11-21 | 2015-12-13 | C-F-P-553, C-F-P-543, SD-CS-L16-752, C-ELV-MSPA-1105 SS | 65d | 0d | 6,994.34 | GEN |
| C-ELV-MSPA-915 |  | Installation of second fix (Cabling & Wirring etc..) at level 16 | 25d | 2015-12-14 | 2016-01-12 | C-ELV-MSPA-905, C-ELV-MSPA-945 | 83d | 0d | 6,994.34 | GEN |
| C-ELV-MSPA-925 |  | Installation & Connection of speakers, Amplifier & Controller at level 16 | 25d | 2016-01-13 | 2016-02-11 | C-ELV-MSPA-915 | 83d | 0d | 16,320.12 | GEN |
| C-ELV-MSPA-935 |  | Installtion & Connection of Media hub, panels and processor at level 16 | 20d | 2016-03-07 | 2016-03-29 | C-ELV-MSPA-925, C-ELV-MSPA-1135 SS | 201d | 0d | 16,320.12 |  |
|  | 3 | **IP CCTV & Access Control System** |  | 2015-09-15 | 2016-04-07 |  |  |  |  |  |
| C-ELV-CCTV-905 |  | Installation of CCTV first Fix Conduits, Boxes within block work, Gypsum Boards & Raised FLooring at level 16 | 20d | 2015-09-15 | 2015-10-11 | C-F-P-553, C-F-P-543, C-ELV-CCTV-1105 | 131d | 0d | 8,161.35 | GEN |
| C-ELV-CCTV-945 |  | Installation of Cable Trays & Truncking at level 16 | 25d | 2015-09-24 | 2015-10-22 | C-ELV-FA-945 SS+5d | 136d | 0d | 2,769.38 |  |
| C-ELV-CCTV-915 |  | Installation of second fix (Cabling & Wirring etc..) at level 16 | 20d | 2015-10-24 | 2015-11-15 | C-ELV-CCTV-905, C-ELV-CCTV-945 | 139d | 0d | 19,043.14 | GEN |
| C-ELV-CCTV-925 |  | Installation & Connection of Camera's & Alarms at level 16 | 18d | 2015-11-16 | 2015-12-06 | C-ELV-CCTV-915 | 139d | 56d | 183,698.91 | GEN |
| C-ELV-CCTV-935 |  | Installtion & Connection of Racks, Panels etc... at level 16 | 25d | 2016-03-10 | 2016-04-07 | C-ELV-CCTV-925 FF, C-ELV-CCTV-1135 SS | 123d | 0d | 7,322.52 |  |
|  | 7 | **Communication System** |  | 2015-08-23 | 2016-08-06 |  |  |  |  |  |
| C-ELV-CS-905 |  | Installation of CS first fix (Conduits, Boxes within block work, Gypsum Boards & Raised FLooring at level 16 | 20d | 2015-08-23 | 2015-09-14 | C-F-P-553, C-F-P-543, SD-CS-L16-712, C-ELV-CS-1105 SS | 119d | 0d | 27,356.12 | GEN |
| C-ELV-CS-945 |  | Installation of Cable Trays & Truncking at level 16 | 18d | 2015-08-29 | 2015-09-17 | C-MEP-E-1136 SS, C-ELV-CS-1145 SS | 136d | 0d | 2,769.38 |  |
| C-ELV-CS-915 |  | Installation of second fix (Cabling & Wirring etc..) at level 16 | 25d | 2015-09-19 | 2015-10-20 | C-ELV-CS-905, C-ELV-CS-945 | 154d | 0d | 82,068.35 | GEN |
| C-ELV-CS-925 |  | Installation & Connection of Wireless Access points & IP dect phone & RJ 45 at level 16 | 25d | 2015-10-21 | 2015-11-18 | C-ELV-CS-915 | 154d | 71d | 93,342.54 | GEN |
| C-ELV-CS-935 |  | Installtion & Connection of Controller & Instrumentation at level 16 | 20d | 2016-07-14 | 2016-08-06 | C-ELV-CS-925, C-ELV-CS-1135 SS | 125d | 0d | 223,314.69 |  |
|  | 4 | **IP, SMATV & QAM Television System** |  | 2015-09-08 | 2016-02-28 |  |  |  |  |  |
| C-ELV-SMATV-905 |  | Installation of SMATV first Fix Conduits, Boxes within block work , Gypsum Boards & Raised FLooring at level 16 | 20d | 2015-09-08 | 2015-10-04 | C-F-P-553, C-F-P-543, SD-CS-L16-812, C-ELV-SMATV-1105 SS | 136d | 0d | 4,452.18 | GEN |
| C-ELV-SMATV-945 |  | Installation of Cable Trays & Truncking at level 16 | 25d | 2015-09-30 | 2015-10-28 | C-ELV-CCTV-945 SS+5d | 136d | 0d | 2,769.38 |  |
| C-ELV-SMATV-915 |  | Installation of second fix (Cabling & Wirring etc..) at level 16 | 16d | 2015-10-29 | 2015-11-16 | C-ELV-SMATV-905, C-ELV-SMATV-945 | 138d | 0d | 10,388.41 | GEN |
| C-ELV-SMATV-925 |  | Installation & Connection of Outlets, switches and splitter at level 16 | 18d | 2015-11-17 | 2015-12-07 | C-ELV-SMATV-915 | 138d | 49d | 6,537.45 | GEN |
| C-ELV-SMATV-935 |  | Installtion & Connection of SMATV & QAM fiber & receiver at level 16 | 20d | 2016-02-04 | 2016-02-28 | C-ELV-SMATV-925, C-ELV-SMATV-1135 SS | 167d | 0d | 2,419.21 |  |

Notes:
- C-ELV-MSPA-945: Expenses: 1 2769.38
- C-ELV-MSPA-905: Expenses: 1 6994.34
- C-ELV-MSPA-915: Expenses: 1 6994.34
- C-ELV-MSPA-925: Expenses: 1 16320.1
- C-ELV-MSPA-935: Expenses: 1 16320.1
- C-ELV-CCTV-905: Expenses: 1 8161.35
- C-ELV-CCTV-945: Expenses: 1 2769.38
- C-ELV-CCTV-915: Expenses: 1 19043.1
- C-ELV-CCTV-925: Expenses: 1 183699
- C-ELV-CCTV-935: Expenses: 1 7322.52
- C-ELV-CS-905: Expenses: 1 27356.1
- C-ELV-CS-945: Expenses: 1 2769.38
- C-ELV-CS-915: Expenses: 1 82068.4
- C-ELV-CS-925: Expenses: 1 93342.5
- C-ELV-CS-935: Expenses: 1 223315
- C-ELV-SMATV-905: Expenses: 1 4452.18
- C-ELV-SMATV-945: Expenses: 1 2769.38
- C-ELV-SMATV-915: Expenses: 1 10388.4
- C-ELV-SMATV-925: Expenses: 1 6537.45
- C-ELV-SMATV-935: Expenses: 1 2419.21

| ID | WBS | Activity | Duration | Start | Finish | Predecessors | Total float | Free float | Cost | AREA |
| --- | --- | --- | --- | --- | --- | --- | --- | --- | --- | --- |
|  | 5 | **BMS system** |  | 2015-09-08 | 2016-03-06 |  |  |  |  |  |
| C-MEP-BMS-905 |  | Installation of BMS first Fix Conduits, Boxes within block work , Gypsum Boards & Raised FLooring at level 16 | 20d | 2015-09-08 | 2015-10-04 | C-F-P-553, C-F-P-543, SD-CS-L16-692, C-MEP-BMS-1105 SS | 119d | 0d | 8,895.95 | GEN |
| C-MEP-BMS-945 |  | Installation of Cable trays & Trunking at level 16 | 20d | 2015-10-06 | 2015-10-28 | C-ELV-SMATV-945 SS+5d | 136d | 0d |  |  |
| C-MEP-BMS-915 |  | Installation of BMS Cabling & Wirring at level 16 | 16d | 2015-10-29 | 2015-11-16 | C-MEP-BMS-905, C-MEP-BMS-945 | 136d | 6d | 11,861.27 | GEN |
| C-MEP-BMS-925 |  | Installation & Connection of BMS Sensors, Relays, & Valves at level 16 | 20d | 2015-11-24 | 2015-12-16 | C-MEP-BMS-915, C-MEP-PD-935, C-MEP-PD-925, C-MEP-FF-734, C-MEP-AC-1508, C-MEP-AC-1488, C-MEP-AC-1498 | 130d | 47d | 14,826.58 | GEN |
| C-MEP-BMS-935 |  | Installtion & Connection of BMS Racks, Panels etc... at level 16 | 20d | 2016-02-13 | 2016-03-06 | C-MEP-BMS-925, C-MEP-BMS-1135 SS | 191d | 0d | 14,826.58 |  |
|  | 13 | **MEP - Level 17** |  | 2015-08-10 | 2016-10-26 |  |  |  |  |  |
|  | 1 | **Electrical** |  | 2015-08-26 | 2016-10-26 |  |  |  |  |  |
| C-MEP-E-1026 |  | Installation of first Electrical Fix Conduits, Boxes within block work & Gypsum Boards at level 17 | 20d | 2015-08-26 | 2015-09-17 | C-F-P-513, C-MEP-E-606 | 82d | 14d | 55,235.7 | GEN |
| C-MEP-E-1076 |  | Installation of Cable Trays & Truncking at level 17 | 18d | 2015-09-14 | 2015-10-07 | C-MEP-FF-684 SS+10d, C-MEP-PD-855 SS+5d, C-MEP-E-656 | 68d | 0d | 21,017.55 |  |
| C-MEP-E-1036 |  | Installation of Electrical Second Fix (Cabling & Wirring etc..). at level 17 | 18d | 2015-10-08 | 2015-10-28 | C-MEP-E-1026, C-MEP-E-1076, C-MEP-E-616 | 68d | 0d | 190,528.33 | GEN |
| C-MEP-E-1046 |  | Installation & Connection of Electrical DB's, SMDB's & MCC's at level 17 | 16d | 2015-10-29 | 2015-11-16 | C-MEP-E-1036, C-MEP-E-626, C-MEP-E-806 | 68d | 14d | 447,553.27 | GEN |
| C-MEP-E-1066 |  | Installation & Connection of Lighting Fixtures & Sockets at level 17 | 14d | 2016-10-11 | 2016-10-26 | C-MEP-E-1036, C-F-CF-1227, C-F-CF-1217, C-F-WF-694, C-F-WF-704, C-MEP-E-466 | 86d | 0d | 71,857.69 | GEN |
|  | 2 | **HVAC** |  | 2015-08-10 | 2016-07-09 |  |  |  |  |  |
| C-MEP-AC-1368 |  | Installation of Ductwork, Insulation & Dampers at level 17 | 23d | 2015-08-10 | 2015-09-05 | C-F-P-513 SS, C-MEP-AC-568, SD-CS-L17-1272 | 78d | 0d | 140,612.08 | GEN |
| C-MEP-AC-1388 |  | Installation of Chilled Water Pipes & Valves at level 17 | 25d | 2015-08-22 | 2015-09-19 | C-MEP-AC-1368 SS+10d, C-MEP-AC-748 | 134d | 0d | 30,741.92 | GEN |
| C-MEP-AC-1408 |  | Pressure testing & Insulation of Chilled Water Pipes at level 17 | 12d | 2015-09-23 | 2015-10-06 | C-MEP-AC-1388 | 134d | 0d | 8,821.1 | GEN |
| C-MEP-AC-1428 |  | Installation of HVAC equipments AHU's, FCU's, ERU's, VAV's, CAV's & Fans at level 17 | 25d | 2015-09-28 | 2015-10-26 | C-MEP-AC-1418 FF, C-MEP-AC-1408 FF, C-MEP-AC-1368 SS | 210d | 32d | 381,752.85 | GEN |
| C-MEP-AC-1418 |  | Pressure testing of Ductwork at level 17 | 8d | 2015-10-18 | 2015-10-26 | C-MEP-AC-1368, C-MEP-AC-1498 | 114d | 0d |  | GEN |
| C-MEP-AC-1378 |  | Installation of Silencers, Attenuators, Isolators & Detectors at level 17 | 12d | 2015-10-27 | 2015-11-09 | C-MEP-AC-1418, C-MEP-AC-1458 SS | 162d | 8d | 28,274.51 | GEN |
| C-MEP-AC-1398 |  | Installation of Chilled Water Pipes Control Devices & Isolator at level 17 | 8d | 2015-12-23 | 2015-12-31 | C-MEP-AC-1408, C-MEP-AC-1478 | 121d | 0d | 2,889.38 | GEN |
| C-MEP-AC-1438 |  | Installation of Grilles, Diffusers & Controller at level 17 | 12d | 2016-06-22 | 2016-07-09 | C-MEP-AC-1428, C-F-CF-1227, C-F-CF-1217, C-F-WF-704 FF, C-F-CF-1217 FF, C-F-WF-694 FF, C-MEP-AC-638 | 148d | 22d | 55,880.87 | GEN |
|  | 3 | **Fire Fighting** |  | 2015-08-22 | 2016-04-11 |  |  |  |  |  |
| C-MEP-FF-684 |  | Installation of FIre fighting Pipes at level 17 | 25d | 2015-08-22 | 2015-09-19 | C-MEP-AC-1368 SS+10d, SD-CS-L17-1292 | 78d | 10d | 45,406.88 | GEN |
| C-MEP-FF-704 |  | Pressure testing of fire fighting pipes at level 17 | 8d | 2015-10-22 | 2015-10-31 | C-MEP-FF-684, C-MEP-FF-744 SS | 133d | 0d | 5,280.67 | GEN |
| C-MEP-FF-694 |  | Installation of fire Fighting Valves at level 17 | 20d | 2015-11-01 | 2015-11-23 | C-MEP-FF-704 | 186d | 8d | 18,427.34 | GEN |
| C-MEP-FF-714 |  | Installation of Fire Fighting Sprinklers & Fire hose Cabinets & Extinguishers at level 17 | 14d | 2016-03-27 | 2016-04-11 | C-MEP-FF-694, C-F-CF-1217, C-F-CF-1207, C-MEP-FF-704, C-MEP-FF-754 SS | 177d | 0d | 64,097.37 | GEN |

Notes:
- C-MEP-BMS-905: Expenses: 1 8895.95
- C-MEP-BMS-915: Expenses: 1 11861.3
- C-MEP-BMS-925: Expenses: 1 14826.6
- C-MEP-BMS-935: Expenses: 1 14826.6
- C-MEP-E-1026: Expenses: 1 55235.7
- C-MEP-E-1076: Expenses: 1 21017.5
- C-MEP-E-1036: Expenses: 1 57962.7; 2 132566
- C-MEP-E-1046: Expenses: 1 78921.1; 2 368632
- C-MEP-E-1066: Expenses: 1 71857.7
- C-MEP-AC-1368: Expenses: 1 140612
- C-MEP-AC-1388: Expenses: 1 30741.9
- C-MEP-AC-1408: Expenses: 1 8821.1
- C-MEP-AC-1428: Expenses: 1 381753
- C-MEP-AC-1378: Expenses: 1 28274.5
- C-MEP-AC-1398: Expenses: 1 2889.38
- C-MEP-AC-1438: Expenses: 1 55880.9
- C-MEP-FF-684: Expenses: 1 45406.9
- C-MEP-FF-704: Expenses: 1 5280.67
- C-MEP-FF-694: Expenses: 1 18427.3
- C-MEP-FF-714: Expenses: 1 64097.4

| ID | WBS | Activity | Duration | Start | Finish | Predecessors | Total float | Free float | Cost | AREA |
| --- | --- | --- | --- | --- | --- | --- | --- | --- | --- | --- |
|  | 4 | **Plumbing & Drainage** |  | 2015-09-08 | 2016-06-28 |  |  |  |  |  |
| C-MEP-PD-855 |  | Installation of Water Pipes & Valves (Hot & Cold atc..) at level 17 | 20d | 2015-09-08 | 2015-10-04 | C-MEP-FF-684 SS, C-F-P-523, SD-CS-L17-1332 | 68d | 0d | 83,874.06 | GEN |
| C-MEP-PD-865 |  | Installation drainage Pipes at level 17 | 25d | 2015-09-24 | 2015-10-22 | C-MEP-PD-855 SS, C-MEP-PD-915 | 148d | 0d | 30,204.4 | GEN |
| C-MEP-PD-875 |  | Pressure testing & Insullation of water pipes at level 17 | 8d | 2015-10-05 | 2015-10-13 | C-MEP-PD-855, C-MEP-PD-925 SS | 168d | 2d | 9,573.63 | GEN |
| C-MEP-PD-885 |  | Pressure testing of drainage pipes at level 17 | 8d | 2015-10-24 | 2015-11-01 | C-MEP-PD-865 | 205d | 27d | 1,651.42 | GEN |
| C-MEP-PD-895 |  | Installation of Outlets, Drains, Gullies, Cowls, & Clean out at level 17 | 20d | 2016-06-06 | 2016-06-28 | C-MEP-PD-875, C-MEP-PD-875 FF, C-F-FF-694, C-F-WF-694, C-F-FF-694 FF, C-F-WF-714, C-F-WF-694 FF, C-F-DW-694, C-MEP-PD-645 | 164d | 15d | 13,120.28 | GEN |
|  | 7 | **ELV systems** |  | 2015-09-08 | 2016-08-06 |  |  |  |  |  |
|  | 1 | **Room Management System** |  | 2015-09-08 | 2016-04-28 |  |  |  |  |  |
| C-ELV-RMS-855 |  | Installation of RMS first fix (Conduits, Boxes within block work , Gypsum Boards & Raised FLooring at level 17 | 20d | 2015-09-08 | 2015-10-04 | C-F-P-523, C-F-P-513, SD-CS-L17-1512, C-ELV-RMS-905 SS | 125d | 2d | 11,902.78 | GEN |
| C-ELV-RMS-895 |  | Installation of Cable Trays & Truncking at level 17 | 25d | 2015-09-23 | 2015-10-21 | C-ELV-CS-895 SS+5d | 178d | 0d | 2,769.38 |  |
| C-ELV-RMS-865 |  | Installation of second fix (Cabling & Wirring etc..) at level 17 | 25d | 2015-10-22 | 2015-11-19 | C-ELV-RMS-855, C-ELV-RMS-895 | 184d | 0d | 11,902.78 | GEN |
| C-ELV-RMS-875 |  | Installation & Connection of ethernets & HVAC thermostates etc.. at level 17 | 25d | 2015-11-21 | 2015-12-20 | C-ELV-RMS-865 | 184d | 45d | 27,773.16 | GEN |
| C-ELV-RMS-885 |  | Installtion & Connection of Panels, Controller, switches, server etc..) at level 17 | 20d | 2016-04-06 | 2016-04-28 | C-ELV-RMS-875, C-ELV-RMS-935 SS | 175d | 0d | 27,773.16 |  |
|  | 12 | **Fire Alarm & Detection System** |  | 2015-09-08 | 2016-04-27 |  |  |  |  |  |
| C-ELV-FA-855 |  | Installation of FA first Fix Conduits, Boxes within block work , Gypsum Boards & Raised FLooring at level 17 | 20d | 2015-09-08 | 2015-10-04 | C-F-P-523, C-F-P-513, C-ELV-FA-905 SS | 125d | 2d | 13,660.92 | GEN |
| C-ELV-FA-895 |  | Installation of Cable Trays & Truncking at level 17 | 25d | 2015-10-05 | 2015-11-02 | C-ELV-MSPA-895 SS+5d, SD-CS-L17-1552 | 178d | 0d | 2,769.38 |  |
| C-ELV-FA-865 |  | Installation of second fix (Cabling & Wirring etc..) at level 17 | 20d | 2015-11-03 | 2015-11-25 | C-ELV-FA-855, C-ELV-FA-895 | 179d | 0d | 22,768.2 | GEN |
| C-ELV-FA-875 |  | Installation & Connection of heat detector, smoke detector, flame detector etc.. at level 17 | 25d | 2015-11-26 | 2015-12-26 | C-ELV-FA-865 | 179d | 40d | 27,321.84 | GEN |
| C-ELV-FA-885 |  | Installtion & Connection of Racks & Panels at level 17 | 20d | 2016-04-05 | 2016-04-27 | C-ELV-FA-875, C-ELV-FA-935 SS | 156d | 0d | 27,321.84 |  |
|  | 2 | **Music System & Public Address System** |  | 2015-09-29 | 2016-03-29 |  |  |  |  |  |
| C-ELV-MSPA-895 |  | Installation of Cable Trays & Truncking at level 17 | 25d | 2015-09-29 | 2015-10-27 | C-ELV-RMS-895 SS+5d | 178d | 0d | 2,769.38 |  |
| C-ELV-MSPA-855 |  | Installation of MS/PA first fix (Conduits, Boxes within block work, Gypsum Boards & Raised FLooring at level 17 | 20d | 2015-11-21 | 2015-12-13 | C-F-P-523, C-F-P-513, SD-CS-L17-1532, C-ELV-MSPA-905 SS | 65d | 0d | 6,994.34 | GEN |
| C-ELV-MSPA-865 |  | Installation of second fix (Cabling & Wirring etc..) at level 17 | 25d | 2015-12-14 | 2016-01-12 | C-ELV-MSPA-855, C-ELV-MSPA-895 | 139d | 0d | 6,994.34 | GEN |
| C-ELV-MSPA-875 |  | Installation & Connection of speakers, Amplifier & Controller at level 17 | 25d | 2016-01-13 | 2016-02-11 | C-ELV-MSPA-865 | 139d | 0d | 16,320.12 | GEN |
| C-ELV-MSPA-885 |  | Installtion & Connection of Media hub, panels and processor at level 17 | 20d | 2016-03-07 | 2016-03-29 | C-ELV-MSPA-875, C-ELV-MSPA-935 SS | 201d | 0d | 16,320.12 |  |

Notes:
- C-MEP-PD-855: Expenses: 1 83874.1
- C-MEP-PD-865: Expenses: 1 30204.4
- C-MEP-PD-875: Expenses: 1 9573.63
- C-MEP-PD-885: Expenses: 1 1651.42
- C-MEP-PD-895: Expenses: 1 13120.3
- C-ELV-RMS-855: Expenses: 1 11902.8
- C-ELV-RMS-895: Expenses: 1 2769.38
- C-ELV-RMS-865: Expenses: 1 11902.8
- C-ELV-RMS-875: Expenses: 1 27773.2
- C-ELV-RMS-885: Expenses: 1 27773.2
- C-ELV-FA-855: Expenses: 1 13660.9
- C-ELV-FA-895: Expenses: 1 2769.38
- C-ELV-FA-865: Expenses: 1 22768.2
- C-ELV-FA-875: Expenses: 1 27321.8
- C-ELV-FA-885: Expenses: 1 27321.8
- C-ELV-MSPA-895: Expenses: 1 2769.38
- C-ELV-MSPA-855: Expenses: 1 6994.34
- C-ELV-MSPA-865: Expenses: 1 6994.34
- C-ELV-MSPA-875: Expenses: 1 16320.1
- C-ELV-MSPA-885: Expenses: 1 16320.1

| ID | WBS | Activity | Duration | Start | Finish | Predecessors | Total float | Free float | Cost | AREA |
| --- | --- | --- | --- | --- | --- | --- | --- | --- | --- | --- |
|  | 3 | **IP CCTV & Access Control System** |  | 2015-09-15 | 2016-04-07 |  |  |  |  |  |
| C-ELV-CCTV-855 |  | Installation of CCTV first Fix Conduits, Boxes within block work, Gypsum Boards & Raised FLooring at level 17 | 20d | 2015-09-15 | 2015-10-11 | C-F-P-523, C-F-P-513, SD-CS-L17-1572, C-ELV-CCTV-905 SS | 131d | 0d | 8,161.35 | GEN |
| C-ELV-CCTV-895 |  | Installation of Cable Trays & Truncking at level 17 | 25d | 2015-10-11 | 2015-11-08 | C-ELV-FA-895 SS+5d | 178d | 0d | 2,769.38 |  |
| C-ELV-CCTV-865 |  | Installation of second fix (Cabling & Wirring etc..) at level 17 | 20d | 2015-11-09 | 2015-12-01 | C-ELV-CCTV-855, C-ELV-CCTV-895 | 181d | 0d | 19,043.14 | GEN |
| C-ELV-CCTV-875 |  | Installation & Connection of Camera's & Alarms at level 17 | 18d | 2015-12-02 | 2015-12-23 | C-ELV-CCTV-865 | 181d | 42d | 183,698.91 | GEN |
| C-ELV-CCTV-885 |  | Installtion & Connection of Racks, Panels etc... at level 17 | 25d | 2016-03-10 | 2016-04-07 | C-ELV-CCTV-875 FF, C-ELV-CCTV-935 SS | 123d | 0d | 7,322.52 |  |
|  | 7 | **Communication System** |  | 2015-09-14 | 2016-08-06 |  |  |  |  |  |
| C-ELV-CS-895 |  | Installation of Cable Trays & Truncking at level 17 | 25d | 2015-09-14 | 2015-10-15 | C-MEP-E-1076 SS, C-ELV-CS-945 SS | 125d | 0d | 2,769.38 |  |
| C-ELV-CS-855 |  | Installation of CS first fix (Conduits, Boxes within block work, Gypsum Boards & Raised FLooring at level 17 | 20d | 2015-09-15 | 2015-10-11 | C-F-P-523, C-F-P-513, SD-CS-L17-1492, C-ELV-CS-905 | 119d | 0d | 27,356.12 | GEN |
| C-ELV-CS-865 |  | Installation of second fix (Cabling & Wirring etc..) at level 17 | 25d | 2015-10-17 | 2015-11-14 | C-ELV-CS-855, C-ELV-CS-895 | 189d | 0d | 82,068.35 | GEN |
| C-ELV-CS-875 |  | Installation & Connection of Wireless Access points & IP dect phone & RJ 45 at level 17 | 25d | 2015-11-15 | 2015-12-13 | C-ELV-CS-865 | 189d | 50d | 93,342.54 | GEN |
| C-ELV-CS-885 |  | Installtion & Connection of Controller & Instrumentation at level 17 | 20d | 2016-07-14 | 2016-08-06 | C-ELV-CS-875, C-ELV-CS-935 SS | 125d | 0d | 223,314.69 |  |
|  | 4 | **IP, SMATV & QAM Television System** |  | 2015-09-08 | 2016-02-28 |  |  |  |  |  |
| C-ELV-SMATV-855 |  | Installation of SMATV first Fix Conduits, Boxes within block work , Gypsum Boards & Raised FLooring at level 17 | 20d | 2015-09-08 | 2015-10-04 | C-F-P-523, C-F-P-513, SD-CS-L17-1592, C-ELV-SMATV-905 SS | 136d | 2d | 4,452.18 | GEN |
| C-ELV-SMATV-895 |  | Installation of Cable Trays & Truncking at level 17 | 25d | 2015-10-17 | 2015-11-14 | C-ELV-CCTV-895 SS+5d | 178d | 0d | 2,769.38 |  |
| C-ELV-SMATV-865 |  | Installation of second fix (Cabling & Wirring etc..) at level 17 | 16d | 2015-11-15 | 2015-12-02 | C-ELV-SMATV-855, C-ELV-SMATV-895 | 180d | 0d | 10,388.41 | GEN |
| C-ELV-SMATV-875 |  | Installation & Connection of Outlets, switches and splitter at level 17 | 18d | 2015-12-03 | 2015-12-24 | C-ELV-SMATV-865 | 180d | 35d | 6,537.45 | GEN |
| C-ELV-SMATV-885 |  | Installtion & Connection of SMATV & QAM fiber & receiver at level 17 | 20d | 2016-02-04 | 2016-02-28 | C-ELV-SMATV-875, C-ELV-SMATV-935 SS | 167d | 0d | 2,419.21 |  |
|  | 5 | **BMS system** |  | 2015-09-08 | 2016-03-06 |  |  |  |  |  |
| C-MEP-BMS-855 |  | Installation of BMS first Fix Conduits, Boxes within block work , Gypsum Boards & Raised FLooring at level 17 | 20d | 2015-09-08 | 2015-10-04 | C-F-P-523, C-F-P-513, SD-CS-L17-1472, C-MEP-BMS-905 SS | 119d | 2d | 8,895.95 | GEN |
| C-MEP-BMS-895 |  | Installation of Cable trays & Trunking at level 17 | 20d | 2015-10-22 | 2015-11-14 | C-ELV-SMATV-895 SS+5d | 178d | 0d |  |  |
| C-MEP-BMS-865 |  | Installation of BMS Cabling & Wirring at level 17 | 16d | 2015-11-15 | 2015-12-02 | C-MEP-BMS-855, C-MEP-BMS-895 | 178d | 0d | 11,861.27 | GEN |
| C-MEP-BMS-875 |  | Installation & Connection of BMS Sensors, Relays, & Valves at level 17 | 20d | 2015-12-03 | 2015-12-27 | C-MEP-BMS-865, C-MEP-PD-885, C-MEP-PD-875, C-MEP-FF-694, C-MEP-AC-1428, C-MEP-AC-1408, C-MEP-AC-1418 | 178d | 39d | 14,826.58 | GEN |
| C-MEP-BMS-885 |  | Installtion & Connection of BMS Racks, Panels etc... at level 17 | 20d | 2016-02-13 | 2016-03-06 | C-MEP-BMS-875, C-MEP-BMS-935 SS | 191d | 0d | 14,826.58 |  |

Notes:
- C-ELV-CCTV-855: Expenses: 1 8161.35
- C-ELV-CCTV-895: Expenses: 1 2769.38
- C-ELV-CCTV-865: Expenses: 1 19043.1
- C-ELV-CCTV-875: Expenses: 1 183699
- C-ELV-CCTV-885: Expenses: 1 7322.52
- C-ELV-CS-895: Expenses: 1 2769.38
- C-ELV-CS-855: Expenses: 1 27356.1
- C-ELV-CS-865: Expenses: 1 82068.4
- C-ELV-CS-875: Expenses: 1 93342.5
- C-ELV-CS-885: Expenses: 1 223315
- C-ELV-SMATV-855: Expenses: 1 4452.18
- C-ELV-SMATV-895: Expenses: 1 2769.38
- C-ELV-SMATV-865: Expenses: 1 10388.4
- C-ELV-SMATV-875: Expenses: 1 6537.45
- C-ELV-SMATV-885: Expenses: 1 2419.21
- C-MEP-BMS-855: Expenses: 1 8895.95
- C-MEP-BMS-865: Expenses: 1 11861.3
- C-MEP-BMS-875: Expenses: 1 14826.6
- C-MEP-BMS-885: Expenses: 1 14826.6

| ID | WBS | Activity | Duration | Start | Finish | Predecessors | Total float | Free float | Cost | AREA |
| --- | --- | --- | --- | --- | --- | --- | --- | --- | --- | --- |
|  | 12 | **MEP - Level 18** |  | 2015-08-12 | 2016-08-17 |  |  |  |  |  |
|  | 1 | **Electrical** |  | 2015-08-29 | 2016-08-17 |  |  |  |  |  |
| C-MEP-E-1206 |  | Installation of first Electrical Fix Conduits, Boxes within block work & Gypsum Boards at level 18 | 20d | 2015-08-29 | 2015-09-23 | C-F-P-603, C-MEP-E-726 | 110d | 14d | 55,235.7 | GEN |
| C-MEP-E-1256 |  | Installation of Cable Trays & Truncking at level 18 | 18d | 2015-09-16 | 2015-10-10 | C-MEP-FF-804 SS+10d, C-MEP-PD-1005 SS+5d, C-MEP-E-776 | 96d | 0d | 21,017.55 |  |
| C-MEP-E-1216 |  | Installation of Electrical Second Fix (Cabling & Wirring etc..). at level 18 | 18d | 2015-10-11 | 2015-10-31 | C-MEP-E-1206, C-MEP-E-1256, C-MEP-E-736 | 96d | 0d | 190,528.33 | GEN |
| C-MEP-E-1226 |  | Installation & Connection of Electrical DB's, SMDB's at level 18 | 16d | 2015-11-01 | 2015-11-18 | C-MEP-E-1216, C-MEP-E-746, C-MEP-E-986 | 96d | 12d | 78,921.15 | GEN |
| C-MEP-E-1246 |  | Installation & Connection of Lighting Fixtures & Sockets at level 18 | 14d | 2016-08-02 | 2016-08-17 | C-MEP-E-1216, C-F-CF-1437, C-F-CF-1427, C-F-WF-814, C-F-WF-824, C-MEP-E-706, C-F-P-LSF-482 FF | 142d | 0d | 71,857.69 | GEN |
|  | 2 | **HVAC** |  | 2015-08-12 | 2016-07-21 |  |  |  |  |  |
| C-MEP-AC-1608 |  | Installation of Ductwork, Insulation & Dampers at level 18 | 23d | 2015-08-12 | 2015-09-07 | C-F-P-603 SS, C-MEP-AC-888, SD-CS-L18-532 | 87d | 0d | 140,612.08 | GEN |
| C-MEP-AC-1628 |  | Installation of Chilled Water Pipes & Valves at level 18 | 25d | 2015-08-24 | 2015-09-24 | C-MEP-AC-1608 SS+10d, C-MEP-AC-828 | 144d | 10d | 30,741.92 | GEN |
| C-MEP-AC-1648 |  | Pressure testing & Insulation of Chilled Water Pipes at level 18 | 12d | 2015-10-07 | 2015-10-20 | C-MEP-AC-1628, C-MEP-AC-1408 | 134d | 0d | 8,821.1 | GEN |
| C-MEP-AC-1668 |  | Installation of HVAC equipments AHU's, FCU's, ERU's, VAV's, CAV's & Fans at level 18 | 25d | 2015-10-07 | 2015-11-04 | C-MEP-AC-1658 FF, C-MEP-AC-1648 FF, C-MEP-AC-1608 SS | 149d | 26d | 219,592.62 | GEN |
| C-MEP-AC-1658 |  | Pressure testing of Ductwork at level 18 | 8d | 2015-10-27 | 2015-11-04 | C-MEP-AC-1608, C-MEP-AC-1418 | 114d | 0d |  | GEN |
| C-MEP-AC-1618 |  | Installation of Silencers, Attenuators, Isolators & Detectors at level 18 | 12d | 2015-11-05 | 2015-11-18 | C-MEP-AC-1658, C-MEP-AC-1378 SS | 154d | 8d | 28,274.51 | GEN |
| C-MEP-AC-1638 |  | Installation of Chilled Water Pipes Control Devices & Isolator at level 18 | 8d | 2015-12-23 | 2015-12-31 | C-MEP-AC-1648, C-MEP-AC-1398 SS | 121d | 0d | 2,889.38 | GEN |
| C-MEP-AC-1678 |  | Installation of Grilles, Diffusers & Controller at level 18 | 12d | 2016-07-09 | 2016-07-21 | C-MEP-AC-1668, C-F-CF-1437, C-F-CF-1427, C-F-WF-824 FF, C-F-CF-1427 FF, C-F-WF-814 FF, C-MEP-AC-958 | 143d | 23d | 55,880.87 | GEN |
|  | 3 | **Fire Fighting** |  | 2015-08-24 | 2016-04-11 |  |  |  |  |  |
| C-MEP-FF-804 |  | Installation of FIre fighting Pipes at level 18 | 25d | 2015-08-24 | 2015-09-24 | C-MEP-AC-1608 SS+10d, SD-CS-L18-552 | 106d | 10d | 45,406.88 | GEN |
| C-MEP-FF-824 |  | Pressure testing of fire fighting pipes at level 18 | 8d | 2015-10-22 | 2015-10-31 | C-MEP-FF-804, C-MEP-FF-704 SS | 133d | 0d | 5,280.67 | GEN |
| C-MEP-FF-814 |  | Installation of fire Fighting Valves at level 18 | 20d | 2015-11-01 | 2015-11-23 | C-MEP-FF-824 | 133d | 10d | 18,427.34 | GEN |
| C-MEP-FF-834 |  | Installation of Fire Fighting Sprinklers & Fire hose Cabinets & Extinguishers at level 18 | 14d | 2016-03-27 | 2016-04-11 | C-MEP-FF-814, C-F-CF-1427, C-F-CF-1417, C-MEP-FF-824, C-MEP-FF-714 SS | 177d | 0d | 64,097.37 | GEN |
|  | 4 | **Plumbing & Drainage** |  | 2015-09-10 | 2016-06-28 |  |  |  |  |  |
| C-MEP-PD-1005 |  | Installation of Water Pipes & Valves (Hot & Cold atc..) at level 18 | 20d | 2015-09-10 | 2015-10-06 | C-MEP-FF-804 SS, C-F-P-613, SD-CS-L18-592 | 96d | 0d | 83,874.06 | GEN |
| C-MEP-PD-1015 |  | Installation drainage Pipes at level 18 | 25d | 2015-09-24 | 2015-10-22 | C-MEP-PD-1005 SS, C-MEP-PD-865 SS | 148d | 0d | 30,204.4 | GEN |
| C-MEP-PD-1025 |  | Pressure testing & Insullation of water pipes at level 18 | 8d | 2015-10-07 | 2015-10-15 | C-MEP-PD-1005, C-MEP-PD-875 SS | 166d | 7d | 9,573.63 | GEN |
| C-MEP-PD-1035 |  | Pressure testing of drainage pipes at level 18 | 8d | 2015-10-24 | 2015-11-01 | C-MEP-PD-1015 | 152d | 29d | 1,651.42 | GEN |
| C-MEP-PD-1045 |  | Installation of Outlets, Drains, Gullies, Cowls, & Clean out at level 18 | 20d | 2016-06-06 | 2016-06-28 | C-MEP-PD-1025, C-MEP-PD-1025 FF, C-F-FF-814, C-F-WF-814, C-F-FF-814 FF, C-F-WF-834, C-F-WF-814 FF, C-F-DW-814, C-MEP-PD-395, C-F-P-LSF-482 FF | 164d | 15d | 13,120.28 | GEN |

Notes:
- C-MEP-E-1206: Expenses: 1 55235.7
- C-MEP-E-1256: Expenses: 1 21017.5
- C-MEP-E-1216: Expenses: 1 57962.7; 2 132566
- C-MEP-E-1226: Expenses: 1 78921.1
- C-MEP-E-1246: Expenses: 1 71857.7
- C-MEP-AC-1608: Expenses: 1 140612
- C-MEP-AC-1628: Expenses: 1 30741.9
- C-MEP-AC-1648: Expenses: 1 8821.1
- C-MEP-AC-1668: Expenses: 1 219593
- C-MEP-AC-1618: Expenses: 1 28274.5
- C-MEP-AC-1638: Expenses: 1 2889.38
- C-MEP-AC-1678: Expenses: 1 55880.9
- C-MEP-FF-804: Expenses: 1 45406.9
- C-MEP-FF-824: Expenses: 1 5280.67
- C-MEP-FF-814: Expenses: 1 18427.3
- C-MEP-FF-834: Expenses: 1 64097.4
- C-MEP-PD-1005: Expenses: 1 83874.1
- C-MEP-PD-1015: Expenses: 1 30204.4
- C-MEP-PD-1025: Expenses: 1 9573.63
- C-MEP-PD-1035: Expenses: 1 1651.42
- C-MEP-PD-1045: Expenses: 1 13120.3

| ID | WBS | Activity | Duration | Start | Finish | Predecessors | Total float | Free float | Cost | AREA |
| --- | --- | --- | --- | --- | --- | --- | --- | --- | --- | --- |
|  | 7 | **ELV systems** |  | 2015-09-10 | 2016-08-06 |  |  |  |  |  |
|  | 1 | **Room Management System** |  | 2015-09-10 | 2016-04-28 |  |  |  |  |  |
| C-ELV-RMS-1005 |  | Installation of RMS first fix (Conduits, Boxes within block work , Gypsum Boards & Raised FLooring at level 18 | 20d | 2015-09-10 | 2015-10-06 | C-F-P-613, C-F-P-603, SD-CS-L18-772, C-ELV-RMS-855 SS | 123d | 7d | 11,902.78 | GEN |
| C-ELV-RMS-1045 |  | Installation of Cable Trays & Truncking at level 18 | 25d | 2015-09-26 | 2015-10-24 | C-ELV-CS-1045 SS+5d | 123d | 0d | 2,769.38 |  |
| C-ELV-RMS-1015 |  | Installation of second fix (Cabling & Wirring etc..) at level 18 | 25d | 2015-10-25 | 2015-11-22 | C-ELV-RMS-1005, C-ELV-RMS-1045 | 129d | 0d | 11,902.78 | GEN |
| C-ELV-RMS-1025 |  | Installation & Connection of ethernets & HVAC thermostates etc.. at level 18 | 25d | 2015-11-23 | 2015-12-22 | C-ELV-RMS-1015 | 129d | 43d | 27,773.16 | GEN |
| C-ELV-RMS-1035 |  | Installtion & Connection of Panels, Controller, switches, server etc..) at level 18 | 20d | 2016-04-06 | 2016-04-28 | C-ELV-RMS-1025, C-ELV-RMS-885 SS | 175d | 0d | 27,773.16 |  |
|  | 12 | **Fire Alarm & Detection System** |  | 2015-09-10 | 2016-04-27 |  |  |  |  |  |
| C-ELV-FA-1005 |  | Installation of FA first Fix Conduits, Boxes within block work , Gypsum Boards & Raised FLooring at level 18 | 20d | 2015-09-10 | 2015-10-06 | C-F-P-613, C-F-P-603, C-ELV-FA-855 SS | 123d | 7d | 13,660.92 | GEN |
| C-ELV-FA-1045 |  | Installation of Cable Trays & Truncking at level 18 | 25d | 2015-10-07 | 2015-11-04 | C-ELV-MSPA-1045 SS+5d, SD-CS-L18-812 | 123d | 0d | 2,769.38 |  |
| C-ELV-FA-1015 |  | Installation of second fix (Cabling & Wirring etc..) at level 18 | 20d | 2015-11-05 | 2015-11-28 | C-ELV-FA-1005, C-ELV-FA-1045 | 124d | 0d | 22,768.2 | GEN |
| C-ELV-FA-1025 |  | Installation & Connection of heat detector, smoke detector, flame detector etc.. at level 18 | 25d | 2015-11-29 | 2015-12-28 | C-ELV-FA-1015 | 124d | 38d | 27,321.84 | GEN |
| C-ELV-FA-1035 |  | Installtion & Connection of Racks & Panels at level 18 | 20d | 2016-04-05 | 2016-04-27 | C-ELV-FA-1025, C-ELV-FA-885 SS | 156d | 0d | 27,321.84 |  |
|  | 2 | **Music System & Public Address System** |  | 2015-10-01 | 2016-03-29 |  |  |  |  |  |
| C-ELV-MSPA-1045 |  | Installation of Cable Trays & Truncking at level 18 | 25d | 2015-10-01 | 2015-10-29 | C-ELV-RMS-1045 SS+5d | 123d | 0d | 2,769.38 |  |
| C-ELV-MSPA-1005 |  | Installation of MS/PA first fix (Conduits, Boxes within block work, Gypsum Boards & Raised FLooring at level 18 | 20d | 2015-11-21 | 2015-12-13 | C-F-P-613, C-F-P-603, SD-CS-L18-792, C-ELV-MSPA-855 SS | 65d | 0d | 6,994.34 | GEN |
| C-ELV-MSPA-1015 |  | Installation of second fix (Cabling & Wirring etc..) at level 18 | 25d | 2015-12-14 | 2016-01-12 | C-ELV-MSPA-1005, C-ELV-MSPA-1045 | 86d | 0d | 6,994.34 | GEN |
| C-ELV-MSPA-1025 |  | Installation & Connection of speakers, Amplifier & Controller at level 18 | 25d | 2016-01-13 | 2016-02-11 | C-ELV-MSPA-1015 | 86d | 0d | 16,320.12 | GEN |
| C-ELV-MSPA-1035 |  | Installtion & Connection of Media hub, panels and processor at level 18 | 20d | 2016-03-07 | 2016-03-29 | C-ELV-MSPA-1025, C-ELV-MSPA-885 SS | 201d | 0d | 16,320.12 |  |
|  | 3 | **IP CCTV & Access Control System** |  | 2015-09-15 | 2016-04-07 |  |  |  |  |  |
| C-ELV-CCTV-1005 |  | Installation of CCTV first Fix Conduits, Boxes within block work, Gypsum Boards & Raised FLooring at level 18 | 20d | 2015-09-15 | 2015-10-11 | C-F-P-613, C-F-P-603, SD-CS-L18-832, C-ELV-CCTV-855 SS | 131d | 3d | 8,161.35 | GEN |
| C-ELV-CCTV-1045 |  | Installation of Cable Trays & Truncking at level 18 | 25d | 2015-10-13 | 2015-11-10 | C-ELV-FA-1045 SS+5d | 123d | 0d | 2,769.38 |  |
| C-ELV-CCTV-1015 |  | Installation of second fix (Cabling & Wirring etc..) at level 18 | 20d | 2015-11-11 | 2015-12-03 | C-ELV-CCTV-1005, C-ELV-CCTV-1045 | 126d | 0d | 19,043.14 | GEN |
| C-ELV-CCTV-1025 |  | Installation & Connection of Camera's & Alarms at level 18 | 18d | 2015-12-05 | 2015-12-26 | C-ELV-CCTV-1015 | 126d | 40d | 183,698.91 | GEN |
| C-ELV-CCTV-1035 |  | Installtion & Connection of Racks, Panels etc... at level 18 | 25d | 2016-03-10 | 2016-04-07 | C-ELV-CCTV-1025 FF, C-ELV-CCTV-885 SS | 123d | 0d | 7,322.52 |  |

Notes:
- C-ELV-RMS-1005: Expenses: 1 11902.8
- C-ELV-RMS-1045: Expenses: 1 2769.38
- C-ELV-RMS-1015: Expenses: 1 11902.8
- C-ELV-RMS-1025: Expenses: 1 27773.2
- C-ELV-RMS-1035: Expenses: 1 27773.2
- C-ELV-FA-1005: Expenses: 1 13660.9
- C-ELV-FA-1045: Expenses: 1 2769.38
- C-ELV-FA-1015: Expenses: 1 22768.2
- C-ELV-FA-1025: Expenses: 1 27321.8
- C-ELV-FA-1035: Expenses: 1 27321.8
- C-ELV-MSPA-1045: Expenses: 1 2769.38
- C-ELV-MSPA-1005: Expenses: 1 6994.34
- C-ELV-MSPA-1015: Expenses: 1 6994.34
- C-ELV-MSPA-1025: Expenses: 1 16320.1
- C-ELV-MSPA-1035: Expenses: 1 16320.1
- C-ELV-CCTV-1005: Expenses: 1 8161.35
- C-ELV-CCTV-1045: Expenses: 1 2769.38
- C-ELV-CCTV-1015: Expenses: 1 19043.1
- C-ELV-CCTV-1025: Expenses: 1 183699
- C-ELV-CCTV-1035: Expenses: 1 7322.52

| ID | WBS | Activity | Duration | Start | Finish | Predecessors | Total float | Free float | Cost | AREA |
| --- | --- | --- | --- | --- | --- | --- | --- | --- | --- | --- |
|  | 7 | **Communication System** |  | 2015-09-15 | 2016-08-06 |  |  |  |  |  |
| C-ELV-CS-1005 |  | Installation of CS first fix (Conduits, Boxes within block work, Gypsum Boards & Raised FLooring at level 18 | 20d | 2015-09-15 | 2015-10-11 | C-F-P-613, C-F-P-603, SD-CS-L18-752, C-ELV-CS-855 SS | 119d | 0d | 27,356.12 | GEN |
| C-ELV-CS-1045 |  | Installation of Cable Trays & Truncking at level 18 | 18d | 2015-09-16 | 2015-10-10 | C-MEP-E-1256 SS, C-ELV-CS-895 SS | 123d | 0d | 2,769.38 |  |
| C-ELV-CS-1015 |  | Installation of second fix (Cabling & Wirring etc..) at level 18 | 25d | 2015-10-12 | 2015-11-09 | C-ELV-CS-1005, C-ELV-CS-1045 | 140d | 0d | 82,068.35 | GEN |
| C-ELV-CS-1025 |  | Installation & Connection of Wireless Access points & IP dect phone & RJ 45 at level 18 | 25d | 2015-11-10 | 2015-12-08 | C-ELV-CS-1015 | 140d | 54d | 93,342.54 | GEN |
| C-ELV-CS-1035 |  | Installtion & Connection of Controller & Instrumentation at level 18 | 20d | 2016-07-14 | 2016-08-06 | C-ELV-CS-1025, C-ELV-CS-885 SS | 125d | 0d | 223,314.69 |  |
|  | 4 | **IP, SMATV & QAM Television System** |  | 2015-09-10 | 2016-02-28 |  |  |  |  |  |
| C-ELV-SMATV-1005 |  | Installation of SMATV first Fix Conduits, Boxes within block work , Gypsum Boards & Raised FLooring at level 18 | 20d | 2015-09-10 | 2015-10-06 | C-F-P-613, C-F-P-603, SD-CS-L18-852, C-ELV-SMATV-855 SS | 134d | 7d | 4,452.18 | GEN |
| C-ELV-SMATV-1045 |  | Installation of Cable Trays & Truncking at level 18 | 25d | 2015-10-19 | 2015-11-16 | C-ELV-CCTV-1045 SS+5d | 123d | 0d | 2,769.38 |  |
| C-ELV-SMATV-1015 |  | Installation of second fix (Cabling & Wirring etc..) at level 18 | 16d | 2015-11-17 | 2015-12-05 | C-ELV-SMATV-1005, C-ELV-SMATV-1045 | 125d | 0d | 10,388.41 | GEN |
| C-ELV-SMATV-1025 |  | Installation & Connection of Outlets, switches and splitter at level 18 | 18d | 2015-12-06 | 2015-12-27 | C-ELV-SMATV-1015 | 125d | 33d | 6,537.45 | GEN |
| C-ELV-SMATV-1035 |  | Installtion & Connection of SMATV & QAM fiber & receiver at level 18 | 20d | 2016-02-04 | 2016-02-28 | C-ELV-SMATV-1025, C-ELV-SMATV-885 SS | 167d | 0d | 2,419.21 |  |
|  | 5 | **BMS system** |  | 2015-09-10 | 2016-03-06 |  |  |  |  |  |
| C-MEP-BMS-1005 |  | Installation of BMS first Fix Conduits, Boxes within block work , Gypsum Boards & Raised FLooring at level 18 | 20d | 2015-09-10 | 2015-10-06 | C-F-P-613, C-F-P-603, SD-CS-L18-732, C-MEP-BMS-855 SS | 117d | 7d | 8,895.95 | GEN |
| C-MEP-BMS-1045 |  | Installation of Cable trays & Trunking at level 18 | 20d | 2015-10-25 | 2015-11-16 | C-ELV-SMATV-1045 SS+5d | 123d | 0d |  |  |
| C-MEP-BMS-1015 |  | Installation of BMS Cabling & Wirring at level 18 | 16d | 2015-11-17 | 2015-12-05 | C-MEP-BMS-1005, C-MEP-BMS-1045 | 123d | 0d | 11,861.27 | GEN |
| C-MEP-BMS-1025 |  | Installation & Connection of BMS Sensors, Relays, & Valves at level 18 | 20d | 2015-12-06 | 2015-12-29 | C-MEP-BMS-1015, C-MEP-PD-1035, C-MEP-PD-1025, C-MEP-FF-814, C-MEP-AC-1668, C-MEP-AC-1648, C-MEP-AC-1658 | 123d | 37d | 14,826.58 | GEN |
| C-MEP-BMS-1035 |  | Installtion & Connection of BMS Racks, Panels etc... at level 18 | 20d | 2016-02-13 | 2016-03-06 | C-MEP-BMS-1025, C-MEP-BMS-885 SS | 191d | 0d | 14,826.58 |  |
|  | 11 | **MEP - Level 19** |  | 2015-08-20 | 2016-09-03 |  |  |  |  |  |
|  | 1 | **Electrical** |  | 2015-09-06 | 2016-09-03 |  |  |  |  |  |
| C-MEP-E-906 |  | Installation of first Electrical Fix Conduits, Boxes within block work & Gypsum Boards at level 19 | 20d | 2015-09-06 | 2015-10-01 | C-F-P-453, C-MEP-E-426 | 121d | 14d | 55,235.7 | GEN |
| C-MEP-E-956 |  | Installation of Cable Trays & Truncking at level 19 | 18d | 2015-09-28 | 2015-10-18 | C-MEP-FF-604 SS+10d, C-MEP-PD-755 SS+5d, C-MEP-E-476 | 114d | 0d | 21,017.55 |  |
| C-MEP-E-916 |  | Installation of Electrical Second Fix (Cabling & Wirring etc..). at level 19 | 18d | 2015-10-19 | 2015-11-08 | C-MEP-E-906, C-MEP-E-956, C-MEP-E-436 | 115d | 0d | 190,528.33 | GEN |
| C-MEP-E-926 |  | Installation & Connection of Electrical DB's, SMDB's at level 19 | 16d | 2015-11-09 | 2015-11-26 | C-MEP-E-916, C-MEP-E-446, C-MEP-E-1346 | 137d | 35d | 78,921.15 | GEN |
| C-MEP-E-946 |  | Installation & Connection of Lighting Fixtures & Sockets at level 19 | 14d | 2016-08-18 | 2016-09-03 | C-MEP-E-916, C-F-CF-1087, C-F-CF-1077, C-F-WF-614, C-F-WF-624, C-MEP-E-826, C-F-P-LSF-492 FF | 118d | 0d | 71,857.69 | GEN |

Notes:
- C-ELV-CS-1005: Expenses: 1 27356.1
- C-ELV-CS-1045: Expenses: 1 2769.38
- C-ELV-CS-1015: Expenses: 1 82068.4
- C-ELV-CS-1025: Expenses: 1 93342.5
- C-ELV-CS-1035: Expenses: 1 223315
- C-ELV-SMATV-1005: Expenses: 1 4452.18
- C-ELV-SMATV-1045: Expenses: 1 2769.38
- C-ELV-SMATV-1015: Expenses: 1 10388.4
- C-ELV-SMATV-1025: Expenses: 1 6537.45
- C-ELV-SMATV-1035: Expenses: 1 2419.21
- C-MEP-BMS-1005: Expenses: 1 8895.95
- C-MEP-BMS-1015: Expenses: 1 11861.3
- C-MEP-BMS-1025: Expenses: 1 14826.6
- C-MEP-BMS-1035: Expenses: 1 14826.6
- C-MEP-E-906: Expenses: 1 55235.7
- C-MEP-E-956: Expenses: 1 21017.5
- C-MEP-E-916: Expenses: 1 57962.7; 2 132566
- C-MEP-E-926: Expenses: 1 78921.1
- C-MEP-E-946: Expenses: 1 71857.7

| ID | WBS | Activity | Duration | Start | Finish | Predecessors | Total float | Free float | Cost | AREA |
| --- | --- | --- | --- | --- | --- | --- | --- | --- | --- | --- |
|  | 2 | **HVAC** |  | 2015-08-20 | 2016-07-21 |  |  |  |  |  |
| C-MEP-AC-1208 |  | Installation of Ductwork, Insulation & Dampers at level 19 | 23d | 2015-08-20 | 2015-09-15 | C-F-P-453 SS, C-MEP-AC-1048, SD-CS-L19-552 | 78d | 0d | 140,612.08 | GEN |
| C-MEP-AC-1228 |  | Installation of Chilled Water Pipes & Valves at level 19 | 25d | 2015-09-01 | 2015-10-03 | C-MEP-AC-1208 SS+10d, C-MEP-AC-988 | 149d | 15d | 30,741.92 | GEN |
| C-MEP-AC-1268 |  | Installation of HVAC equipments AHU's, FCU's, ERU's, VAV's, CAV's & Fans at level 19 | 25d | 2015-10-17 | 2015-11-14 | C-MEP-AC-1258 FF, C-MEP-AC-1248 FF, C-MEP-AC-1208 SS | 141d | 25d | 90,126.87 | GEN |
| C-MEP-AC-1248 |  | Pressure testing & Insulation of Chilled Water Pipes at level 19 | 12d | 2015-10-21 | 2015-11-03 | C-MEP-AC-1228, C-MEP-AC-1648 | 134d | 0d | 8,821.1 | GEN |
| C-MEP-AC-1258 |  | Pressure testing of Ductwork at level 19 | 8d | 2015-11-05 | 2015-11-14 | C-MEP-AC-1208, C-MEP-AC-1658 | 114d | 0d |  | GEN |
| C-MEP-AC-1218 |  | Installation of Silencers, Attenuators, Isolators & Detectors at level 19 | 12d | 2015-11-15 | 2015-11-28 | C-MEP-AC-1258, C-MEP-AC-1618 SS | 146d | 0d | 28,274.51 | GEN |
| C-MEP-AC-1238 |  | Installation of Chilled Water Pipes Control Devices & Isolator at level 19 | 8d | 2015-12-23 | 2015-12-31 | C-MEP-AC-1248, C-MEP-AC-1638 SS | 121d | 0d | 2,889.38 | GEN |
| C-MEP-AC-1278 |  | Installation of Grilles, Diffusers & Controller at level 19 | 12d | 2016-07-09 | 2016-07-21 | C-MEP-AC-1268, C-F-CF-1087, C-F-CF-1077, C-F-WF-624 FF, C-F-CF-1077 FF, C-F-WF-614 FF, C-MEP-AC-1118 | 137d | 11d | 55,880.87 | GEN |
|  | 3 | **Fire Fighting** |  | 2015-09-01 | 2016-04-11 |  |  |  |  |  |
| C-MEP-FF-604 |  | Installation of FIre fighting Pipes at level 19 | 25d | 2015-09-01 | 2015-10-03 | C-MEP-AC-1208 SS+10d, SD-CS-L19-572 | 124d | 10d | 45,406.88 | GEN |
| C-MEP-FF-624 |  | Pressure testing of fire fighting pipes at level 19 | 8d | 2015-10-22 | 2015-10-31 | C-MEP-FF-604, C-MEP-FF-824 SS | 133d | 0d | 5,280.67 | GEN |
| C-MEP-FF-614 |  | Installation of fire Fighting Valves at level 19 | 20d | 2015-11-01 | 2015-11-23 | C-MEP-FF-624 | 133d | 17d | 18,427.34 | GEN |
| C-MEP-FF-634 |  | Installation of Fire Fighting Sprinklers & Fire hose Cabinets & Extinguishers at level 19 | 14d | 2016-03-27 | 2016-04-11 | C-MEP-FF-614, C-F-CF-1077, C-F-CF-1067, C-MEP-FF-624, C-MEP-FF-834 SS | 177d | 0d | 64,097.37 | GEN |
|  | 4 | **Plumbing & Drainage** |  | 2015-09-19 | 2016-07-25 |  |  |  |  |  |
| C-MEP-PD-755 |  | Installation of Water Pipes & Valves (Hot & Cold atc..) at level 19 | 20d | 2015-09-19 | 2015-10-14 | C-MEP-FF-604 SS, C-F-P-463, SD-CS-L19-612 | 114d | 0d | 83,874.06 | GEN |
| C-MEP-PD-765 |  | Installation drainage Pipes at level 19 | 25d | 2015-09-24 | 2015-10-22 | C-MEP-PD-755 SS, C-MEP-PD-1015 SS | 148d | 0d | 30,204.4 | GEN |
| C-MEP-PD-775 |  | Pressure testing & Insullation of water pipes at level 19 | 8d | 2015-10-15 | 2015-10-24 | C-MEP-PD-755, C-MEP-PD-1025 SS | 159d | 7d | 9,573.63 | GEN |
| C-MEP-PD-785 |  | Pressure testing of drainage pipes at level 19 | 8d | 2015-10-24 | 2015-11-01 | C-MEP-PD-765 | 152d | 36d | 1,651.42 | GEN |
| C-MEP-PD-795 |  | Installation of Outlets, Drains, Gullies, Cowls, & Clean out at level 19 | 20d | 2016-06-29 | 2016-07-25 | C-MEP-PD-775, C-MEP-PD-775 FF, C-F-FF-614, C-F-WF-614, C-F-FF-614 FF, C-F-WF-634, C-F-WF-614 FF, C-F-DW-614, C-MEP-PD-595, C-F-P-LSF-492 FF | 154d | 0d | 13,120.28 | GEN |
|  | 7 | **ELV systems** |  | 2015-09-19 | 2016-08-06 |  |  |  |  |  |
|  | 1 | **Room Management System** |  | 2015-09-19 | 2016-04-28 |  |  |  |  |  |
| C-ELV-RMS-755 |  | Installation of RMS first fix (Conduits, Boxes within block work , Gypsum Boards & Raised FLooring at level 19 | 20d | 2015-09-19 | 2015-10-14 | C-F-P-463, C-F-P-453, SD-CS-L19-792, C-ELV-RMS-1005 SS | 116d | 7d | 11,902.78 | GEN |
| C-ELV-RMS-795 |  | Installation of Cable Trays & Truncking at level 19 | 18d | 2015-10-04 | 2015-10-24 | C-ELV-CS-795 SS+5d | 116d | 0d | 2,769.38 |  |
| C-ELV-RMS-765 |  | Installation of second fix (Cabling & Wirring etc..) at level 19 | 25d | 2015-10-25 | 2015-11-22 | C-ELV-RMS-755, C-ELV-RMS-795 | 129d | 0d | 11,902.78 | GEN |
| C-ELV-RMS-775 |  | Installation & Connection of ethernets & HVAC thermostates etc.. at level 19 | 25d | 2015-11-23 | 2015-12-22 | C-ELV-RMS-765 | 129d | 46d | 27,773.16 | GEN |
| C-ELV-RMS-785 |  | Installtion & Connection of Panels, Controller, switches, server etc..) at level 19 | 20d | 2016-04-06 | 2016-04-28 | C-ELV-RMS-775, C-ELV-RMS-1035 SS | 175d | 0d | 27,773.16 |  |

Notes:
- C-MEP-AC-1208: Expenses: 1 140612
- C-MEP-AC-1228: Expenses: 1 30741.9
- C-MEP-AC-1268: Expenses: 1 90126.9
- C-MEP-AC-1248: Expenses: 1 8821.1
- C-MEP-AC-1218: Expenses: 1 28274.5
- C-MEP-AC-1238: Expenses: 1 2889.38
- C-MEP-AC-1278: Expenses: 1 55880.9
- C-MEP-FF-604: Expenses: 1 45406.9
- C-MEP-FF-624: Expenses: 1 5280.67
- C-MEP-FF-614: Expenses: 1 18427.3
- C-MEP-FF-634: Expenses: 1 64097.4
- C-MEP-PD-755: Expenses: 1 83874.1
- C-MEP-PD-765: Expenses: 1 30204.4
- C-MEP-PD-775: Expenses: 1 9573.63
- C-MEP-PD-785: Expenses: 1 1651.42
- C-MEP-PD-795: Expenses: 1 13120.3
- C-ELV-RMS-755: Expenses: 1 11902.8
- C-ELV-RMS-795: Expenses: 1 2769.38
- C-ELV-RMS-765: Expenses: 1 11902.8
- C-ELV-RMS-775: Expenses: 1 27773.2
- C-ELV-RMS-785: Expenses: 1 27773.2

| ID | WBS | Activity | Duration | Start | Finish | Predecessors | Total float | Free float | Cost | AREA |
| --- | --- | --- | --- | --- | --- | --- | --- | --- | --- | --- |
|  | 12 | **Fire Alarm & Detection System** |  | 2015-09-19 | 2016-04-27 |  |  |  |  |  |
| C-ELV-FA-755 |  | Installation of FA first Fix Conduits, Boxes within block work , Gypsum Boards & Raised FLooring at level 19 | 20d | 2015-09-19 | 2015-10-14 | C-F-P-463, C-F-P-453, C-ELV-FA-1005 SS | 116d | 7d | 13,660.92 | GEN |
| C-ELV-FA-795 |  | Installation of Cable Trays & Truncking at level 19 | 18d | 2015-10-15 | 2015-11-04 | C-ELV-MSPA-795 SS+5d, SD-CS-L19-832 | 116d | 0d | 2,769.38 |  |
| C-ELV-FA-765 |  | Installation of second fix (Cabling & Wirring etc..) at level 19 | 20d | 2015-11-05 | 2015-11-28 | C-ELV-FA-755, C-ELV-FA-795 | 124d | 0d | 22,768.2 | GEN |
| C-ELV-FA-775 |  | Installation & Connection of heat detector, smoke detector, flame detector etc.. at level 19 | 25d | 2015-11-29 | 2015-12-28 | C-ELV-FA-765 | 124d | 41d | 27,321.84 | GEN |
| C-ELV-FA-785 |  | Installtion & Connection of Racks & Panels at level 19 | 20d | 2016-04-05 | 2016-04-27 | C-ELV-FA-775, C-ELV-FA-1035 SS | 156d | 0d | 27,321.84 |  |
|  | 2 | **Music System & Public Address System** |  | 2015-10-10 | 2016-03-29 |  |  |  |  |  |
| C-ELV-MSPA-795 |  | Installation of Cable Trays & Truncking at level 19 | 18d | 2015-10-10 | 2015-10-29 | C-ELV-RMS-795 SS+5d | 116d | 0d | 2,769.38 |  |
| C-ELV-MSPA-755 |  | Installation of MS/PA first fix (Conduits, Boxes within block work, Gypsum Boards & Raised FLooring at level 19 | 20d | 2015-11-21 | 2015-12-13 | C-F-P-463, C-F-P-453, SD-CS-L19-812, C-ELV-MSPA-1005 SS | 65d | 0d | 6,994.34 | GEN |
| C-ELV-MSPA-765 |  | Installation of second fix (Cabling & Wirring etc..) at level 19 | 25d | 2015-12-14 | 2016-01-12 | C-ELV-MSPA-755, C-ELV-MSPA-795 | 86d | 0d | 6,994.34 | GEN |
| C-ELV-MSPA-775 |  | Installation & Connection of speakers, Amplifier & Controller at level 19 | 25d | 2016-01-13 | 2016-02-11 | C-ELV-MSPA-765 | 86d | 3d | 16,320.12 | GEN |
| C-ELV-MSPA-785 |  | Installtion & Connection of Media hub, panels and processor at level 19 | 20d | 2016-03-07 | 2016-03-29 | C-ELV-MSPA-775, C-ELV-MSPA-1035 SS | 201d | 0d | 16,320.12 |  |
|  | 3 | **IP CCTV & Access Control System** |  | 2015-09-19 | 2016-04-07 |  |  |  |  |  |
| C-ELV-CCTV-755 |  | Installation of CCTV first Fix Conduits, Boxes within block work, Gypsum Boards & Raised FLooring at level 19 | 20d | 2015-09-19 | 2015-10-14 | C-F-P-463, C-F-P-453, SD-CS-L19-852, C-ELV-CCTV-1005 SS | 128d | 7d | 8,161.35 | GEN |
| C-ELV-CCTV-795 |  | Installation of Cable Trays & Truncking at level 19 | 18d | 2015-10-21 | 2015-11-10 | C-ELV-FA-795 SS+5d | 116d | 0d | 2,769.38 |  |
| C-ELV-CCTV-765 |  | Installation of second fix (Cabling & Wirring etc..) at level 19 | 20d | 2015-11-11 | 2015-12-03 | C-ELV-CCTV-755, C-ELV-CCTV-795 | 126d | 0d | 19,043.14 | GEN |
| C-ELV-CCTV-775 |  | Installation & Connection of Camera's & Alarms at level 19 | 18d | 2015-12-05 | 2015-12-26 | C-ELV-CCTV-765 | 126d | 43d | 183,698.91 | GEN |
| C-ELV-CCTV-785 |  | Installtion & Connection of Racks, Panels etc... at level 19 | 25d | 2016-03-10 | 2016-04-07 | C-ELV-CCTV-775 FF, C-ELV-CCTV-1035 SS | 123d | 0d | 7,322.52 |  |
|  | 7 | **Communication System** |  | 2015-09-19 | 2016-08-06 |  |  |  |  |  |
| C-ELV-CS-755 |  | Installation of CS first fix (Conduits, Boxes within block work, Gypsum Boards & Raised FLooring at level 19 | 20d | 2015-09-19 | 2015-10-14 | C-F-P-463, C-F-P-453, SD-CS-L19-772, C-ELV-CS-1005 SS | 116d | 3d | 27,356.12 | GEN |
| C-ELV-CS-795 |  | Installation of Cable Trays & Truncking at level 19 | 18d | 2015-09-28 | 2015-10-18 | C-MEP-E-956 SS, C-ELV-CS-1045 SS | 116d | 0d | 2,769.38 |  |
| C-ELV-CS-765 |  | Installation of second fix (Cabling & Wirring etc..) at level 19 | 25d | 2015-10-19 | 2015-11-16 | C-ELV-CS-755, C-ELV-CS-795 | 134d | 0d | 82,068.35 | GEN |
| C-ELV-CS-775 |  | Installation & Connection of Wireless Access points & IP dect phone & RJ 45 at level 19 | 25d | 2015-11-17 | 2015-12-15 | C-ELV-CS-765 | 134d | 51d | 93,342.54 | GEN |
| C-ELV-CS-785 |  | Installtion & Connection of Controller & Instrumentation at level 19 | 20d | 2016-07-14 | 2016-08-06 | C-ELV-CS-775, C-ELV-CS-1035 SS | 125d | 0d | 223,314.69 |  |

Notes:
- C-ELV-FA-755: Expenses: 1 13660.9
- C-ELV-FA-795: Expenses: 1 2769.38
- C-ELV-FA-765: Expenses: 1 22768.2
- C-ELV-FA-775: Expenses: 1 27321.8
- C-ELV-FA-785: Expenses: 1 27321.8
- C-ELV-MSPA-795: Expenses: 1 2769.38
- C-ELV-MSPA-755: Expenses: 1 6994.34
- C-ELV-MSPA-765: Expenses: 1 6994.34
- C-ELV-MSPA-775: Expenses: 1 16320.1
- C-ELV-MSPA-785: Expenses: 1 16320.1
- C-ELV-CCTV-755: Expenses: 1 8161.35
- C-ELV-CCTV-795: Expenses: 1 2769.38
- C-ELV-CCTV-765: Expenses: 1 19043.1
- C-ELV-CCTV-775: Expenses: 1 183699
- C-ELV-CCTV-785: Expenses: 1 7322.52
- C-ELV-CS-755: Expenses: 1 27356.1
- C-ELV-CS-795: Expenses: 1 2769.38
- C-ELV-CS-765: Expenses: 1 82068.4
- C-ELV-CS-775: Expenses: 1 93342.5
- C-ELV-CS-785: Expenses: 1 223315

| ID | WBS | Activity | Duration | Start | Finish | Predecessors | Total float | Free float | Cost | AREA |
| --- | --- | --- | --- | --- | --- | --- | --- | --- | --- | --- |
|  | 4 | **IP, SMATV & QAM Television System** |  | 2015-09-19 | 2016-02-28 |  |  |  |  |  |
| C-ELV-SMATV-755 |  | Installation of SMATV first Fix Conduits, Boxes within block work , Gypsum Boards & Raised FLooring at level 19 | 20d | 2015-09-19 | 2015-10-14 | C-F-P-463, C-F-P-453, SD-CS-L19-872, C-ELV-SMATV-1005 SS | 127d | 7d | 4,452.18 | GEN |
| C-ELV-SMATV-795 |  | Installation of Cable Trays & Truncking at level 19 | 18d | 2015-10-27 | 2015-11-16 | C-ELV-CCTV-795 SS+5d | 116d | 0d | 2,769.38 |  |
| C-ELV-SMATV-765 |  | Installation of second fix (Cabling & Wirring etc..) at level 19 | 16d | 2015-11-17 | 2015-12-05 | C-ELV-SMATV-755, C-ELV-SMATV-795 | 125d | 0d | 10,388.41 | GEN |
| C-ELV-SMATV-775 |  | Installation & Connection of Outlets, switches and splitter at level 19 | 18d | 2015-12-06 | 2015-12-27 | C-ELV-SMATV-765 | 125d | 33d | 6,537.45 | GEN |
| C-ELV-SMATV-785 |  | Installtion & Connection of SMATV & QAM fiber & receiver at level 19 | 20d | 2016-02-04 | 2016-02-28 | C-ELV-SMATV-775, C-ELV-SMATV-1035 SS | 167d | 0d | 2,419.21 |  |
|  | 5 | **BMS system** |  | 2015-09-19 | 2016-03-29 |  |  |  |  |  |
| C-MEP-BMS-755 |  | Installation of BMS first Fix Conduits, Boxes within block work , Gypsum Boards & Raised FLooring at level 19 | 20d | 2015-09-19 | 2015-10-14 | C-F-P-463, C-F-P-453, SD-CS-L19-752, C-MEP-BMS-1005 SS | 110d | 0d | 8,895.95 | GEN |
| C-MEP-BMS-795 |  | Installation of Cable trays & Trunking at level 19 | 20d | 2015-11-02 | 2015-11-24 | C-ELV-SMATV-795 SS+5d | 116d | 0d |  |  |
| C-MEP-BMS-765 |  | Installation of BMS Cabling & Wirring at level 19 | 16d | 2015-11-25 | 2015-12-13 | C-MEP-BMS-755, C-MEP-BMS-795 | 116d | 0d | 11,861.27 | GEN |
| C-MEP-BMS-775 |  | Installation & Connection of BMS Sensors, Relays, & Valves at level 19 | 20d | 2015-12-14 | 2016-01-06 | C-MEP-BMS-765, C-MEP-PD-785, C-MEP-PD-775, C-MEP-FF-614, C-MEP-AC-1268, C-MEP-AC-1248, C-MEP-AC-1258 | 116d | 33d | 14,826.58 | GEN |
| C-MEP-BMS-785 |  | Installtion & Connection of BMS Racks, Panels etc... at level 19 | 20d | 2016-03-07 | 2016-03-29 | C-MEP-BMS-775, C-MEP-BMS-1035 | 191d | 0d | 14,826.58 |  |
|  | 10 | **MEP - Level 20** |  | 2015-08-29 | 2016-09-22 |  |  |  |  |  |
|  | 1 | **Electrical** |  | 2015-09-14 | 2016-09-22 |  |  |  |  |  |
| C-MEP-E-1146 |  | Installation of first Electrical Fix Conduits, Boxes within block work & Gypsum Boards at level 20 | 20d | 2015-09-14 | 2015-10-10 | C-F-P-573, C-MEP-E-666 | 132d | 14d | 55,235.7 | GEN |
| C-MEP-E-1196 |  | Installation of Cable Trays & Truncking at level 20 | 18d | 2015-10-06 | 2015-10-26 | C-MEP-FF-764 SS+10d, C-MEP-PD-955 SS+5d, C-MEP-E-716 | 107d | 0d | 21,017.55 |  |
| C-MEP-E-1156 |  | Installation of Electrical Second Fix (Cabling & Wirring etc..). at level 20 | 18d | 2015-10-27 | 2015-11-16 | C-MEP-E-1146, C-MEP-E-1196, C-MEP-E-676 | 124d | 0d | 190,528.33 | GEN |
| C-MEP-E-1166 |  | Installation & Connection of Electrical DB's, SMDB's at level 20 | 16d | 2015-11-17 | 2015-12-05 | C-MEP-E-1156, C-MEP-E-686, C-MEP-E-1106 SS | 130d | 28d | 78,921.15 | GEN |
| C-MEP-E-1186 |  | Installation & Connection of Lighting Fixtures & Sockets at level 20 | 14d | 2016-09-04 | 2016-09-22 | C-MEP-E-1156, C-F-CF-1367, C-F-CF-1357, C-F-WF-774, C-F-WF-784, C-MEP-E-1006, C-F-P-LSF-502 FF | 114d | 0d | 71,857.69 | GEN |
|  | 2 | **HVAC** |  | 2015-08-29 | 2016-07-31 |  |  |  |  |  |
| C-MEP-AC-1528 |  | Installation of Ductwork, Insulation & Dampers at level 20 | 23d | 2015-08-29 | 2015-09-27 | C-F-P-573 SS, C-MEP-AC-1288, SD-CS-L20-572 | 92d | 0d | 140,612.08 | GEN |
| C-MEP-AC-1548 |  | Installation of Chilled Water Pipes & Valves at level 20 | 25d | 2015-09-09 | 2015-10-11 | C-MEP-AC-1528 SS+10d, C-MEP-AC-588 | 154d | 20d | 30,741.92 | GEN |
| C-MEP-AC-1588 |  | Installation of HVAC equipments AHU's, FCU's, ERU's, VAV's, CAV's & Fans at level 20 | 25d | 2015-10-26 | 2015-11-23 | C-MEP-AC-1578 FF, C-MEP-AC-1568 FF, C-MEP-AC-1528 SS | 142d | 24d | 60,603.47 | GEN |
| C-MEP-AC-1568 |  | Pressure testing & Insulation of Chilled Water Pipes at level 20 | 12d | 2015-11-04 | 2015-11-17 | C-MEP-AC-1548, C-MEP-AC-1248 | 134d | 0d | 8,821.1 | GEN |
| C-MEP-AC-1578 |  | Pressure testing of Ductwork at level 20 | 8d | 2015-11-15 | 2015-11-23 | C-MEP-AC-1528, C-MEP-AC-1258 | 114d | 0d |  | GEN |
| C-MEP-AC-1538 |  | Installation of Silencers, Attenuators, Isolators & Detectors at level 20 | 12d | 2015-11-29 | 2015-12-12 | C-MEP-AC-1578, C-MEP-AC-1218 | 146d | 4d | 28,274.51 | GEN |
| C-MEP-AC-1558 |  | Installation of Chilled Water Pipes Control Devices & Isolator at level 20 | 8d | 2015-12-23 | 2015-12-31 | C-MEP-AC-1568, C-MEP-AC-1238 SS | 130d | 0d | 2,889.38 | GEN |
| C-MEP-AC-1598 |  | Installation of Grilles, Diffusers & Controller at level 20 | 12d | 2016-07-18 | 2016-07-31 | C-MEP-AC-1588, C-F-CF-1367, C-F-CF-1357, C-F-WF-784 FF, C-F-CF-1357 FF, C-F-WF-774 FF, C-MEP-AC-1358 | 129d | 3d | 55,880.87 | GEN |

Notes:
- C-ELV-SMATV-755: Expenses: 1 4452.18
- C-ELV-SMATV-795: Expenses: 1 2769.38
- C-ELV-SMATV-765: Expenses: 1 10388.4
- C-ELV-SMATV-775: Expenses: 1 6537.45
- C-ELV-SMATV-785: Expenses: 1 2419.21
- C-MEP-BMS-755: Expenses: 1 8895.95
- C-MEP-BMS-765: Expenses: 1 11861.3
- C-MEP-BMS-775: Expenses: 1 14826.6
- C-MEP-BMS-785: Expenses: 1 14826.6
- C-MEP-E-1146: Expenses: 1 55235.7
- C-MEP-E-1196: Expenses: 1 21017.5
- C-MEP-E-1156: Expenses: 1 57962.7; 2 132566
- C-MEP-E-1166: Expenses: 1 78921.1
- C-MEP-E-1186: Expenses: 1 71857.7
- C-MEP-AC-1528: Expenses: 1 140612
- C-MEP-AC-1548: Expenses: 1 30741.9
- C-MEP-AC-1588: Expenses: 1 60603.5
- C-MEP-AC-1568: Expenses: 1 8821.1
- C-MEP-AC-1538: Expenses: 1 28274.5
- C-MEP-AC-1558: Expenses: 1 2889.38
- C-MEP-AC-1598: Expenses: 1 55880.9

| ID | WBS | Activity | Duration | Start | Finish | Predecessors | Total float | Free float | Cost | AREA |
| --- | --- | --- | --- | --- | --- | --- | --- | --- | --- | --- |
|  | 3 | **Fire Fighting** |  | 2015-09-09 | 2016-04-27 |  |  |  |  |  |
| C-MEP-FF-764 |  | Installation of FIre fighting Pipes at level 20 | 25d | 2015-09-09 | 2015-10-11 | C-MEP-AC-1528 SS+10d, SD-CS-L20-592 | 117d | 10d | 45,406.88 | GEN |
| C-MEP-FF-784 |  | Pressure testing of fire fighting pipes at level 20 | 8d | 2015-11-01 | 2015-11-09 | C-MEP-FF-764, C-MEP-FF-624 | 134d | 0d | 5,280.67 | GEN |
| C-MEP-FF-774 |  | Installation of fire Fighting Valves at level 20 | 20d | 2015-11-10 | 2015-12-02 | C-MEP-FF-784 | 134d | 16d | 18,427.34 | GEN |
| C-MEP-FF-794 |  | Installation of Fire Fighting Sprinklers & Fire hose Cabinets & Extinguishers at level 20 | 14d | 2016-04-12 | 2016-04-27 | C-MEP-FF-774, C-F-CF-1357, C-F-CF-1347, C-MEP-FF-784, C-MEP-FF-634 | 177d | 0d | 64,097.37 | GEN |
|  | 4 | **Plumbing & Drainage** |  | 2015-09-30 | 2016-07-31 |  |  |  |  |  |
| C-MEP-PD-955 |  | Installation of Water Pipes & Valves (Hot & Cold atc..) at level 20 | 20d | 2015-09-30 | 2015-10-22 | C-MEP-FF-764 SS, C-F-P-583, SD-CS-L20-632 | 107d | 0d | 83,874.06 | GEN |
| C-MEP-PD-965 |  | Installation drainage Pipes at level 20 | 25d | 2015-09-30 | 2015-10-28 | C-MEP-PD-955 SS, C-MEP-PD-765 SS | 143d | 0d | 30,204.4 | GEN |
| C-MEP-PD-975 |  | Pressure testing & Insullation of water pipes at level 20 | 8d | 2015-10-24 | 2015-11-01 | C-MEP-PD-955, C-MEP-PD-775 SS | 161d | 14d | 9,573.63 | GEN |
| C-MEP-PD-985 |  | Pressure testing of drainage pipes at level 20 | 8d | 2015-10-29 | 2015-11-07 | C-MEP-PD-965 | 156d | 38d | 1,651.42 | GEN |
| C-MEP-PD-995 |  | Installation of Outlets, Drains, Gullies, Cowls, & Clean out at level 20 | 20d | 2016-07-09 | 2016-07-31 | C-MEP-PD-975, C-MEP-PD-975 FF, C-F-FF-774, C-F-WF-774, C-F-FF-774 FF, C-F-WF-794, C-F-WF-774 FF, C-F-DW-774, C-MEP-PD-695, C-F-P-LSF-502 FF | 149d | 0d | 13,120.28 | GEN |
|  | 7 | **ELV systems** |  | 2015-09-30 | 2016-08-06 |  |  |  |  |  |
|  | 1 | **Room Management System** |  | 2015-09-30 | 2016-05-22 |  |  |  |  |  |
| C-ELV-RMS-955 |  | Installation of RMS first fix (Conduits, Boxes within block work , Gypsum Boards & Raised FLooring at level 20 | 20d | 2015-09-30 | 2015-10-22 | C-F-P-583, C-F-P-573, SD-CS-L20-812, C-ELV-RMS-755 SS | 109d | 14d | 11,902.78 | GEN |
| C-ELV-RMS-995 |  | Installation of Cable Trays & Truncking at level 20 | 25d | 2015-10-12 | 2015-11-09 | C-ELV-CS-995 SS+5d | 118d | 0d | 2,769.38 |  |
| C-ELV-RMS-965 |  | Installation of second fix (Cabling & Wirring etc..) at level 20 | 25d | 2015-11-10 | 2015-12-08 | C-ELV-RMS-955, C-ELV-RMS-995 | 124d | 0d | 11,902.78 | GEN |
| C-ELV-RMS-975 |  | Installation & Connection of ethernets & HVAC thermostates etc.. at level 20 | 25d | 2015-12-09 | 2016-01-07 | C-ELV-RMS-965 | 124d | 49d | 27,773.16 | GEN |
| C-ELV-RMS-985 |  | Installtion & Connection of Panels, Controller, switches, server etc..) at level 20 | 20d | 2016-04-30 | 2016-05-22 | C-ELV-RMS-975, C-ELV-RMS-785 | 175d | 0d | 27,773.16 |  |
|  | 12 | **Fire Alarm & Detection System** |  | 2015-09-30 | 2016-04-27 |  |  |  |  |  |
| C-ELV-FA-955 |  | Installation of FA first Fix Conduits, Boxes within block work , Gypsum Boards & Raised FLooring at level 20 | 20d | 2015-09-30 | 2015-10-22 | C-F-P-583, C-F-P-573, C-ELV-FA-755 SS | 109d | 14d | 13,660.92 | GEN |
| C-ELV-FA-995 |  | Installation of Cable Trays & Truncking at level 20 | 25d | 2015-10-24 | 2015-11-21 | C-ELV-MSPA-995 SS+5d, SD-CS-L20-852 | 118d | 0d | 2,769.38 |  |
| C-ELV-FA-965 |  | Installation of second fix (Cabling & Wirring etc..) at level 20 | 20d | 2015-11-22 | 2015-12-14 | C-ELV-FA-955, C-ELV-FA-995 | 119d | 0d | 22,768.2 | GEN |
| C-ELV-FA-975 |  | Installation & Connection of heat detector, smoke detector, flame detector etc.. at level 20 | 25d | 2015-12-15 | 2016-01-13 | C-ELV-FA-965 | 119d | 44d | 27,321.84 | GEN |
| C-ELV-FA-985 |  | Installtion & Connection of Racks & Panels at level 20 | 20d | 2016-04-05 | 2016-04-27 | C-ELV-FA-975, C-ELV-FA-785 SS | 156d | 0d | 27,321.84 |  |

Notes:
- C-MEP-FF-764: Expenses: 1 45406.9
- C-MEP-FF-784: Expenses: 1 5280.67
- C-MEP-FF-774: Expenses: 1 18427.3
- C-MEP-FF-794: Expenses: 1 64097.4
- C-MEP-PD-955: Expenses: 1 83874.1
- C-MEP-PD-965: Expenses: 1 30204.4
- C-MEP-PD-975: Expenses: 1 9573.63
- C-MEP-PD-985: Expenses: 1 1651.42
- C-MEP-PD-995: Expenses: 1 13120.3
- C-ELV-RMS-955: Expenses: 1 11902.8
- C-ELV-RMS-995: Expenses: 1 2769.38
- C-ELV-RMS-965: Expenses: 1 11902.8
- C-ELV-RMS-975: Expenses: 1 27773.2
- C-ELV-RMS-985: Expenses: 1 27773.2
- C-ELV-FA-955: Expenses: 1 13660.9
- C-ELV-FA-995: Expenses: 1 2769.38
- C-ELV-FA-965: Expenses: 1 22768.2
- C-ELV-FA-975: Expenses: 1 27321.8
- C-ELV-FA-985: Expenses: 1 27321.8

| ID | WBS | Activity | Duration | Start | Finish | Predecessors | Total float | Free float | Cost | AREA |
| --- | --- | --- | --- | --- | --- | --- | --- | --- | --- | --- |
|  | 2 | **Music System & Public Address System** |  | 2015-10-18 | 2016-03-29 |  |  |  |  |  |
| C-ELV-MSPA-995 |  | Installation of Cable Trays & Truncking at level 20 | 25d | 2015-10-18 | 2015-11-15 | C-ELV-RMS-995 SS+5d | 118d | 0d | 2,769.38 |  |
| C-ELV-MSPA-955 |  | Installation of MS/PA first fix (Conduits, Boxes within block work, Gypsum Boards & Raised FLooring at level 20 | 20d | 2015-12-14 | 2016-01-06 | C-F-P-583, C-F-P-573, SD-CS-L20-832, C-ELV-MSPA-755 | 65d | 0d | 6,994.34 | GEN |
| C-ELV-MSPA-965 |  | Installation of second fix (Cabling & Wirring etc..) at level 20 | 25d | 2016-01-07 | 2016-02-04 | C-ELV-MSPA-955, C-ELV-MSPA-995 | 75d | 0d | 6,994.34 | GEN |
| C-ELV-MSPA-975 |  | Installation & Connection of speakers, Amplifier & Controller at level 20 | 25d | 2016-02-06 | 2016-03-06 | C-ELV-MSPA-965 | 75d | 0d | 16,320.12 | GEN |
| C-ELV-MSPA-985 |  | Installtion & Connection of Media hub, panels and processor at level 20 | 20d | 2016-03-07 | 2016-03-29 | C-ELV-MSPA-975, C-ELV-MSPA-785 SS | 201d | 0d | 16,320.12 |  |
|  | 3 | **IP CCTV & Access Control System** |  | 2015-09-30 | 2016-04-07 |  |  |  |  |  |
| C-ELV-CCTV-955 |  | Installation of CCTV first Fix Conduits, Boxes within block work, Gypsum Boards & Raised FLooring at level 20 | 20d | 2015-09-30 | 2015-10-22 | C-F-P-583, C-F-P-573, SD-CS-L20-872, C-ELV-CCTV-755 SS | 121d | 14d | 8,161.35 | GEN |
| C-ELV-CCTV-995 |  | Installation of Cable Trays & Truncking at level 20 | 25d | 2015-10-29 | 2015-11-26 | C-ELV-FA-995 SS+5d | 118d | 0d | 2,769.38 |  |
| C-ELV-CCTV-965 |  | Installation of second fix (Cabling & Wirring etc..) at level 20 | 20d | 2015-11-28 | 2015-12-21 | C-ELV-CCTV-955, C-ELV-CCTV-995 | 121d | 0d | 19,043.14 | GEN |
| C-ELV-CCTV-975 |  | Installation & Connection of Camera's & Alarms at level 20 | 18d | 2015-12-22 | 2016-01-11 | C-ELV-CCTV-965 | 121d | 46d | 183,698.91 | GEN |
| C-ELV-CCTV-985 |  | Installtion & Connection of Racks, Panels etc... at level 20 | 25d | 2016-03-10 | 2016-04-07 | C-ELV-CCTV-975 FF, C-ELV-CCTV-785 SS | 123d | 0d | 7,322.52 |  |
|  | 7 | **Communication System** |  | 2015-09-30 | 2016-08-06 |  |  |  |  |  |
| C-ELV-CS-955 |  | Installation of CS first fix (Conduits, Boxes within block work, Gypsum Boards & Raised FLooring at level 20 | 20d | 2015-09-30 | 2015-10-22 | C-F-P-583, C-F-P-573, SD-CS-L20-792, C-ELV-CS-755 SS | 109d | 3d | 27,356.12 | GEN |
| C-ELV-CS-995 |  | Installation of Cable Trays & Truncking at level 20 | 18d | 2015-10-06 | 2015-10-26 | C-MEP-E-1196 SS, C-ELV-CS-795 SS | 118d | 0d | 2,769.38 |  |
| C-ELV-CS-965 |  | Installation of second fix (Cabling & Wirring etc..) at level 20 | 25d | 2015-10-27 | 2015-11-24 | C-ELV-CS-955, C-ELV-CS-995 | 136d | 0d | 82,068.35 | GEN |
| C-ELV-CS-975 |  | Installation & Connection of Wireless Access points & IP dect phone & RJ 45 at level 20 | 25d | 2015-11-25 | 2015-12-24 | C-ELV-CS-965 | 136d | 61d | 93,342.54 | GEN |
| C-ELV-CS-985 |  | Installtion & Connection of Controller & Instrumentation at level 20 | 20d | 2016-07-14 | 2016-08-06 | C-ELV-CS-975, C-ELV-CS-785 SS | 125d | 0d | 223,314.69 |  |
|  | 4 | **IP, SMATV & QAM Television System** |  | 2015-09-30 | 2016-02-28 |  |  |  |  |  |
| C-ELV-SMATV-955 |  | Installation of SMATV first Fix Conduits, Boxes within block work , Gypsum Boards & Raised FLooring at level 20 | 20d | 2015-09-30 | 2015-10-22 | C-F-P-583, C-F-P-573, SD-CS-L20-892, C-ELV-SMATV-755 SS | 120d | 14d | 4,452.18 | GEN |
| C-ELV-SMATV-995 |  | Installation of Cable Trays & Truncking at level 20 | 25d | 2015-11-04 | 2015-12-02 | C-ELV-CCTV-995 SS+5d | 118d | 0d | 2,769.38 |  |
| C-ELV-SMATV-965 |  | Installation of second fix (Cabling & Wirring etc..) at level 20 | 16d | 2015-12-03 | 2015-12-22 | C-ELV-SMATV-955, C-ELV-SMATV-995 | 120d | 0d | 10,388.41 | GEN |
| C-ELV-SMATV-975 |  | Installation & Connection of Outlets, switches and splitter at level 20 | 18d | 2015-12-23 | 2016-01-12 | C-ELV-SMATV-965 | 120d | 19d | 6,537.45 | GEN |
| C-ELV-SMATV-985 |  | Installtion & Connection of SMATV & QAM fiber & receiver at level 20 | 20d | 2016-02-04 | 2016-02-28 | C-ELV-SMATV-975, C-ELV-SMATV-785 SS | 167d | 0d | 2,419.21 |  |

Notes:
- C-ELV-MSPA-995: Expenses: 1 2769.38
- C-ELV-MSPA-955: Expenses: 1 6994.34
- C-ELV-MSPA-965: Expenses: 1 6994.34
- C-ELV-MSPA-975: Expenses: 1 16320.1
- C-ELV-MSPA-985: Expenses: 1 16320.1
- C-ELV-CCTV-955: Expenses: 1 8161.35
- C-ELV-CCTV-995: Expenses: 1 2769.38
- C-ELV-CCTV-965: Expenses: 1 19043.1
- C-ELV-CCTV-975: Expenses: 1 183699
- C-ELV-CCTV-985: Expenses: 1 7322.52
- C-ELV-CS-955: Expenses: 1 27356.1
- C-ELV-CS-995: Expenses: 1 2769.38
- C-ELV-CS-965: Expenses: 1 82068.4
- C-ELV-CS-975: Expenses: 1 93342.5
- C-ELV-CS-985: Expenses: 1 223315
- C-ELV-SMATV-955: Expenses: 1 4452.18
- C-ELV-SMATV-995: Expenses: 1 2769.38
- C-ELV-SMATV-965: Expenses: 1 10388.4
- C-ELV-SMATV-975: Expenses: 1 6537.45
- C-ELV-SMATV-985: Expenses: 1 2419.21

| ID | WBS | Activity | Duration | Start | Finish | Predecessors | Total float | Free float | Cost | AREA |
| --- | --- | --- | --- | --- | --- | --- | --- | --- | --- | --- |
|  | 5 | **BMS system** |  | 2015-10-15 | 2016-03-29 |  |  |  |  |  |
| C-MEP-BMS-955 |  | Installation of BMS first Fix Conduits, Boxes within block work , Gypsum Boards & Raised FLooring at level 20 | 20d | 2015-10-15 | 2015-11-07 | C-F-P-583, C-F-P-573, SD-CS-L20-772, C-MEP-BMS-755 | 110d | 1d | 8,895.95 | GEN |
| C-MEP-BMS-995 |  | Installation of Cable trays & Trunking at level 20 | 20d | 2015-11-10 | 2015-12-02 | C-ELV-SMATV-995 SS+5d | 118d | 0d |  |  |
| C-MEP-BMS-965 |  | Installation of BMS Cabling & Wirring at level 20 | 16d | 2015-12-03 | 2015-12-22 | C-MEP-BMS-955, C-MEP-BMS-995 | 118d | 0d | 11,861.27 | GEN |
| C-MEP-BMS-975 |  | Installation & Connection of BMS Sensors, Relays, & Valves at level 20 | 20d | 2015-12-23 | 2016-01-14 | C-MEP-BMS-965, C-MEP-PD-985, C-MEP-PD-975, C-MEP-FF-774, C-MEP-AC-1588, C-MEP-AC-1568, C-MEP-AC-1578 | 118d | 43d | 14,826.58 | GEN |
| C-MEP-BMS-985 |  | Installtion & Connection of BMS Racks, Panels etc... at level 20 | 20d | 2016-03-07 | 2016-03-29 | C-MEP-BMS-975, C-MEP-BMS-785 SS | 191d | 0d | 14,826.58 |  |
|  | 9 | **MEP - Level 21** |  | 2015-09-14 | 2016-10-10 |  |  |  |  |  |
|  | 1 | **Electrical** |  | 2015-10-04 | 2016-10-10 |  |  |  |  |  |
| C-MEP-E-1266 |  | Installation of first Electrical Fix Conduits, Boxes within block work & Gypsum Board at level 21 | 20d | 2015-10-04 | 2015-10-26 | C-F-P-633, C-MEP-E-786 | 68d | 14d | 55,235.7 | GEN |
| C-MEP-E-1316 |  | Installation of Cable Trays & Truncking at level 21 | 18d | 2015-10-22 | 2015-11-11 | C-MEP-FF-844 SS+10d, C-MEP-PD-1055 SS+5d, C-MEP-E-836 | 54d | 0d | 21,017.55 |  |
| C-MEP-E-1276 |  | Installation of Electrical Second Fix (Cabling & Wirring etc..). at level 21 | 18d | 2015-11-12 | 2015-12-02 | C-MEP-E-1266, C-MEP-E-1316, C-MEP-E-796 | 54d | 0d | 190,528.33 | GEN |
| C-MEP-E-1286 |  | Installation & Connection of Electrical DB's, SMDB's at level 21 | 16d | 2015-12-03 | 2015-12-22 | C-MEP-E-1276, C-MEP-E-1046 | 54d | 1d | 78,921.15 | GEN |
| C-MEP-E-1306 |  | Installation & Connection of Lighting Fixtures & Sockets at level 21 | 14d | 2016-09-25 | 2016-10-10 | C-MEP-E-1276, C-F-CF-1507, C-F-CF-1497, C-F-WF-854, C-F-WF-864, C-MEP-E-1366, C-F-P-LSF-512 FF | 100d | 0d | 71,857.69 | GEN |
|  | 2 | **HVAC** |  | 2015-09-14 | 2016-07-31 |  |  |  |  |  |
| C-MEP-AC-1688 |  | Installation of Ductwork, Insulation & Dampers at level 21 | 23d | 2015-09-14 | 2015-10-13 | C-F-P-633 SS, C-MEP-AC-1768 SS, SD-CS-L21-592 | 64d | 0d | 140,612.08 | GEN |
| C-MEP-AC-1708 |  | Installation of Chilled Water Pipes & Valves at level 21 | 25d | 2015-09-29 | 2015-10-27 | C-MEP-AC-1688 SS+10d, C-MEP-AC-908 | 140d | 18d | 30,741.92 | GEN |
| C-MEP-AC-1748 |  | Installation of HVAC equipments AHU's, FCU's, ERU's, VAV's, CAV's & Fans at level 21 | 25d | 2015-11-04 | 2015-12-02 | C-MEP-AC-1738 FF, C-MEP-AC-1728 FF, C-MEP-AC-1688 SS | 142d | 30d | 56,229.62 | GEN |
| C-MEP-AC-1728 |  | Pressure testing & Insulation of Chilled Water Pipes at level 21 | 12d | 2015-11-18 | 2015-12-01 | C-MEP-AC-1708, C-MEP-AC-1568 | 134d | 0d | 8,821.1 | GEN |
| C-MEP-AC-1738 |  | Pressure testing of Ductwork at level 21 | 8d | 2015-11-24 | 2015-12-02 | C-MEP-AC-1688, C-MEP-AC-1578 | 114d | 0d |  | GEN |
| C-MEP-AC-1698 |  | Installation of Silencers, Attenuators, Isolators & Detectors at level 21 | 12d | 2015-12-03 | 2015-12-16 | C-MEP-AC-1738, C-MEP-AC-1538 SS | 150d | 8d | 28,274.51 | GEN |
| C-MEP-AC-1718 |  | Installation of Chilled Water Pipes Control Devices & Isolator at level 21 | 8d | 2015-12-23 | 2015-12-31 | C-MEP-AC-1728, C-MEP-AC-1558 SS | 138d | 55d | 2,889.38 | GEN |
| C-MEP-AC-1758 |  | Installation of Grilles, Diffusers & Controller at level 21 | 12d | 2016-07-18 | 2016-07-31 | C-MEP-AC-1748, C-F-CF-1507, C-F-CF-1497, C-F-WF-864 FF, C-F-CF-1497 FF, C-F-WF-854 FF, C-MEP-AC-1838 | 129d | 3d | 55,880.87 | GEN |
|  | 3 | **Fire Fighting** |  | 2015-09-29 | 2016-04-20 |  |  |  |  |  |
| C-MEP-FF-844 |  | Installation of FIre fighting Pipes at level 21 | 25d | 2015-09-29 | 2015-10-27 | C-MEP-AC-1688 SS+10d, SD-CS-L21-612 | 64d | 0d | 45,406.88 | GEN |
| C-MEP-FF-864 |  | Pressure testing of fire fighting pipes at level 21 | 8d | 2015-10-28 | 2015-11-05 | C-MEP-FF-844 | 145d | 0d | 5,280.67 | GEN |
| C-MEP-FF-854 |  | Installation of fire Fighting Valves at level 21 | 20d | 2015-11-07 | 2015-11-29 | C-MEP-FF-864 | 145d | 33d | 18,427.34 | GEN |
| C-MEP-FF-874 |  | Installation of Fire Fighting Sprinklers & Fire hose Cabinets & Extinguishers at level 21 | 14d | 2016-04-05 | 2016-04-20 | C-MEP-FF-854, C-F-CF-1497, C-F-CF-1487, C-MEP-FF-864 | 183d | 0d | 64,097.37 | GEN |

Notes:
- C-MEP-BMS-955: Expenses: 1 8895.95
- C-MEP-BMS-965: Expenses: 1 11861.3
- C-MEP-BMS-975: Expenses: 1 14826.6
- C-MEP-BMS-985: Expenses: 1 14826.6
- C-MEP-E-1266: Expenses: 1 55235.7
- C-MEP-E-1316: Expenses: 1 21017.5
- C-MEP-E-1276: Expenses: 1 57962.7; 2 132566
- C-MEP-E-1286: Expenses: 1 78921.1
- C-MEP-E-1306: Expenses: 1 71857.7
- C-MEP-AC-1688: Expenses: 1 140612
- C-MEP-AC-1708: Expenses: 1 30741.9
- C-MEP-AC-1748: Expenses: 1 56229.6
- C-MEP-AC-1728: Expenses: 1 8821.1
- C-MEP-AC-1698: Expenses: 1 28274.5
- C-MEP-AC-1718: Expenses: 1 2889.38
- C-MEP-AC-1758: Expenses: 1 55880.9
- C-MEP-FF-844: Expenses: 1 45406.9
- C-MEP-FF-864: Expenses: 1 5280.67
- C-MEP-FF-854: Expenses: 1 18427.3
- C-MEP-FF-874: Expenses: 1 64097.4

| ID | WBS | Activity | Duration | Start | Finish | Predecessors | Total float | Free float | Cost | AREA |
| --- | --- | --- | --- | --- | --- | --- | --- | --- | --- | --- |
|  | 4 | **Plumbing & Drainage** |  | 2015-10-17 | 2016-07-25 |  |  |  |  |  |
| C-MEP-PD-1055 |  | Installation of Water Pipes & Valves (Hot & Cold atc..) at level 21 | 20d | 2015-10-17 | 2015-11-08 | C-MEP-FF-844 SS, C-F-P-643, SD-CS-L21-652 | 54d | 0d | 83,874.06 | GEN |
| C-MEP-PD-1065 |  | Installation drainage Pipes at level 21 | 25d | 2015-10-17 | 2015-11-14 | C-MEP-PD-1055 SS, C-MEP-PD-965 SS | 129d | 0d | 30,204.4 | GEN |
| C-MEP-PD-1075 |  | Pressure testing & Insullation of water pipes at level 21 | 8d | 2015-11-09 | 2015-11-17 | C-MEP-PD-1055, C-MEP-PD-975 SS | 155d | 0d | 9,573.63 | GEN |
| C-MEP-PD-1085 |  | Pressure testing of drainage pipes at level 21 | 8d | 2015-11-15 | 2015-11-23 | C-MEP-PD-1065 | 150d | 38d | 1,651.42 | GEN |
| C-MEP-PD-1095 |  | Installation of Outlets, Drains, Gullies, Cowls, & Clean out at level 21 | 20d | 2016-06-29 | 2016-07-25 | C-MEP-PD-1075, C-MEP-PD-1075 FF, C-F-FF-854, C-F-WF-854, C-F-FF-854 FF, C-F-WF-874, C-F-WF-854 FF, C-F-DW-854, C-MEP-PD-845, C-F-P-LSF-512 FF | 154d | 0d | 13,120.28 | GEN |
|  | 7 | **ELV systems** |  | 2015-10-17 | 2016-08-06 |  |  |  |  |  |
|  | 1 | **Room Management System** |  | 2015-10-17 | 2016-05-22 |  |  |  |  |  |
| C-ELV-RMS-1055 |  | Installation of RMS first fix (Conduits, Boxes within block work , Gypsum Boards & Raised FLooring at level 21 | 20d | 2015-10-17 | 2015-11-08 | C-F-P-643, C-F-P-633, SD-CS-L21-832, C-ELV-RMS-955 SS | 95d | 0d | 11,902.78 | GEN |
| C-ELV-RMS-1095 |  | Installation of Cable Trays & Truncking at level 21 | 25d | 2015-10-28 | 2015-11-25 | C-ELV-CS-1095 SS+5d | 112d | 0d | 2,769.38 |  |
| C-ELV-RMS-1065 |  | Installation of second fix (Cabling & Wirring etc..) at level 21 | 25d | 2015-11-26 | 2015-12-26 | C-ELV-RMS-1055, C-ELV-RMS-1095 | 118d | 0d | 11,902.78 | GEN |
| C-ELV-RMS-1075 |  | Installation & Connection of ethernets & HVAC thermostates etc.. at level 21 | 25d | 2015-12-27 | 2016-01-24 | C-ELV-RMS-1065 | 118d | 35d | 27,773.16 | GEN |
| C-ELV-RMS-1085 |  | Installtion & Connection of Panels, Controller, switches, server etc..) at level 21 | 20d | 2016-04-30 | 2016-05-22 | C-ELV-RMS-1075, C-ELV-RMS-985 SS | 175d | 0d | 27,773.16 |  |
|  | 12 | **Fire Alarm & Detection System** |  | 2015-10-17 | 2016-04-27 |  |  |  |  |  |
| C-ELV-FA-1055 |  | Installation of FA first Fix Conduits, Boxes within block work , Gypsum Boards & Raised FLooring at level 21 | 20d | 2015-10-17 | 2015-11-08 | C-F-P-643, C-F-P-633, C-ELV-FA-955 SS | 95d | 0d | 13,660.92 | GEN |
| C-ELV-FA-1095 |  | Installation of Cable Trays & Truncking at level 21 | 25d | 2015-11-09 | 2015-12-07 | C-ELV-MSPA-1095 SS+5d, SD-CS-L21-872 | 112d | 0d | 2,769.38 |  |
| C-ELV-FA-1065 |  | Installation of second fix (Cabling & Wirring etc..) at level 21 | 20d | 2015-12-08 | 2015-12-31 | C-ELV-FA-1055, C-ELV-FA-1095 | 113d | 0d | 22,768.2 | GEN |
| C-ELV-FA-1075 |  | Installation & Connection of heat detector, smoke detector, flame detector etc.. at level 21 | 25d | 2016-01-02 | 2016-01-30 | C-ELV-FA-1065 | 113d | 30d | 27,321.84 | GEN |
| C-ELV-FA-1085 |  | Installtion & Connection of Racks & Panels at level 21 | 20d | 2016-04-05 | 2016-04-27 | C-ELV-FA-1075, C-ELV-FA-985 SS | 156d | 0d | 27,321.84 |  |
|  | 2 | **Music System & Public Address System** |  | 2015-11-03 | 2016-03-29 |  |  |  |  |  |
| C-ELV-MSPA-1095 |  | Installation of Cable Trays & Truncking at level 21 | 25d | 2015-11-03 | 2015-12-01 | C-ELV-RMS-1095 SS+5d | 112d | 0d | 2,769.38 |  |
| C-ELV-MSPA-1055 |  | Installation of MS/PA first fix (Conduits, Boxes within block work, Gypsum Boards & Raised FLooring at level 21 | 20d | 2015-12-14 | 2016-01-06 | C-F-P-643, C-F-P-633, SD-CS-L21-852, C-ELV-MSPA-955 SS | 65d | 0d | 6,994.34 | GEN |
| C-ELV-MSPA-1065 |  | Installation of second fix (Cabling & Wirring etc..) at level 21 | 25d | 2016-01-07 | 2016-02-04 | C-ELV-MSPA-1055, C-ELV-MSPA-1095 | 83d | 0d | 6,994.34 | GEN |
| C-ELV-MSPA-1075 |  | Installation & Connection of speakers, Amplifier & Controller at level 21 | 25d | 2016-02-06 | 2016-03-06 | C-ELV-MSPA-1065 | 83d | 0d | 16,320.12 | GEN |
| C-ELV-MSPA-1085 |  | Installtion & Connection of Media hub, panels and processor at level 21 | 20d | 2016-03-07 | 2016-03-29 | C-ELV-MSPA-1075, C-ELV-MSPA-985 SS | 201d | 0d | 16,320.12 |  |

Notes:
- C-MEP-PD-1055: Expenses: 1 83874.1
- C-MEP-PD-1065: Expenses: 1 30204.4
- C-MEP-PD-1075: Expenses: 1 9573.63
- C-MEP-PD-1085: Expenses: 1 1651.42
- C-MEP-PD-1095: Expenses: 1 13120.3
- C-ELV-RMS-1055: Expenses: 1 11902.8
- C-ELV-RMS-1095: Expenses: 1 2769.38
- C-ELV-RMS-1065: Expenses: 1 11902.8
- C-ELV-RMS-1075: Expenses: 1 27773.2
- C-ELV-RMS-1085: Expenses: 1 27773.2
- C-ELV-FA-1055: Expenses: 1 13660.9
- C-ELV-FA-1095: Expenses: 1 2769.38
- C-ELV-FA-1065: Expenses: 1 22768.2
- C-ELV-FA-1075: Expenses: 1 27321.8
- C-ELV-FA-1085: Expenses: 1 27321.8
- C-ELV-MSPA-1095: Expenses: 1 2769.38
- C-ELV-MSPA-1055: Expenses: 1 6994.34
- C-ELV-MSPA-1065: Expenses: 1 6994.34
- C-ELV-MSPA-1075: Expenses: 1 16320.1
- C-ELV-MSPA-1085: Expenses: 1 16320.1

| ID | WBS | Activity | Duration | Start | Finish | Predecessors | Total float | Free float | Cost | AREA |
| --- | --- | --- | --- | --- | --- | --- | --- | --- | --- | --- |
|  | 3 | **IP CCTV & Access Control System** |  | 2015-10-17 | 2016-05-07 |  |  |  |  |  |
| C-ELV-CCTV-1055 |  | Installation of CCTV first Fix Conduits, Boxes within block work, Gypsum Boards & Raised FLooring at level 21 | 20d | 2015-10-17 | 2015-11-08 | C-F-P-643, C-F-P-633, SD-CS-L21-892, C-ELV-CCTV-955 SS | 107d | 0d | 8,161.35 | GEN |
| C-ELV-CCTV-1095 |  | Installation of Cable Trays & Truncking at level 21 | 25d | 2015-11-15 | 2015-12-13 | C-ELV-FA-1095 SS+5d | 112d | 0d | 2,769.38 |  |
| C-ELV-CCTV-1065 |  | Installation of second fix (Cabling & Wirring etc..) at level 21 | 20d | 2015-12-14 | 2016-01-06 | C-ELV-CCTV-1055, C-ELV-CCTV-1095 | 115d | 0d | 19,043.14 | GEN |
| C-ELV-CCTV-1075 |  | Installation & Connection of Camera's & Alarms at level 21 | 18d | 2016-01-07 | 2016-01-27 | C-ELV-CCTV-1065 | 115d | 32d | 183,698.91 | GEN |
| C-ELV-CCTV-1085 |  | Installtion & Connection of Racks, Panels etc... at level 21 | 25d | 2016-04-09 | 2016-05-07 | C-ELV-CCTV-1075 FF, C-ELV-CCTV-985 | 123d | 0d | 7,322.52 |  |
|  | 7 | **Communication System** |  | 2015-10-17 | 2016-08-06 |  |  |  |  |  |
| C-ELV-CS-1055 |  | Installation of CS first fix (Conduits, Boxes within block work, Gypsum Boards & Raised FLooring at level 21 | 20d | 2015-10-17 | 2015-11-08 | C-F-P-643, C-F-P-633, SD-CS-L21-812, C-ELV-CS-955 SS | 95d | 0d | 27,356.12 | GEN |
| C-ELV-CS-1095 |  | Installation of Cable Trays & Truncking at level 21 | 18d | 2015-10-22 | 2015-11-11 | C-MEP-E-1316 SS, C-ELV-CS-995 SS | 112d | 0d | 2,769.38 |  |
| C-ELV-CS-1065 |  | Installation of second fix (Cabling & Wirring etc..) at level 21 | 25d | 2015-11-12 | 2015-12-10 | C-ELV-CS-1055, C-ELV-CS-1095 | 130d | 0d | 82,068.35 | GEN |
| C-ELV-CS-1075 |  | Installation & Connection of Wireless Access points & IP dect phone & RJ 45 at level 21 | 25d | 2015-12-12 | 2016-01-10 | C-ELV-CS-1065 | 130d | 47d | 93,342.54 | GEN |
| C-ELV-CS-1085 |  | Installtion & Connection of Controller & Instrumentation at level 21 | 20d | 2016-07-14 | 2016-08-06 | C-ELV-CS-1075, C-ELV-CS-985 SS | 125d | 0d | 223,314.69 |  |
|  | 4 | **IP, SMATV & QAM Television System** |  | 2015-10-17 | 2016-03-22 |  |  |  |  |  |
| C-ELV-SMATV-1055 |  | Installation of SMATV first Fix Conduits, Boxes within block work , Gypsum Boards & Raised FLooring at level 21 | 20d | 2015-10-17 | 2015-11-08 | C-F-P-643, C-F-P-633, SD-CS-L21-912, C-ELV-SMATV-955 SS | 106d | 0d | 4,452.18 | GEN |
| C-ELV-SMATV-1095 |  | Installation of Cable Trays & Truncking at level 21 | 25d | 2015-11-21 | 2015-12-20 | C-ELV-CCTV-1095 SS+5d | 112d | 0d | 2,769.38 |  |
| C-ELV-SMATV-1065 |  | Installation of second fix (Cabling & Wirring etc..) at level 21 | 16d | 2015-12-21 | 2016-01-07 | C-ELV-SMATV-1055, C-ELV-SMATV-1095 | 114d | 0d | 10,388.41 | GEN |
| C-ELV-SMATV-1075 |  | Installation & Connection of Outlets, switches and splitter at level 21 | 18d | 2016-01-09 | 2016-01-28 | C-ELV-SMATV-1065 | 114d | 25d | 6,537.45 | GEN |
| C-ELV-SMATV-1085 |  | Installtion & Connection of SMATV & QAM fiber & receiver at level 21 | 20d | 2016-02-29 | 2016-03-22 | C-ELV-SMATV-1075, C-ELV-SMATV-985 | 167d | 0d | 2,419.21 |  |
|  | 5 | **BMS system** |  | 2015-10-17 | 2016-03-29 |  |  |  |  |  |
| C-MEP-BMS-1055 |  | Installation of BMS first Fix Conduits, Boxes within block work , Gypsum Boards & Raised FLooring at level 21 | 20d | 2015-10-17 | 2015-11-08 | C-F-P-643, C-F-P-633, SD-CS-L21-792, C-MEP-BMS-955 SS | 109d | 0d | 8,895.95 | GEN |
| C-MEP-BMS-1095 |  | Installation of Cable trays & Trunking at level 21 | 20d | 2015-11-26 | 2015-12-20 | C-ELV-SMATV-1095 SS+5d | 112d | 0d |  |  |
| C-MEP-BMS-1065 |  | Installation of BMS Cabling & Wirring at level 21 | 16d | 2015-12-21 | 2016-01-07 | C-MEP-BMS-1055, C-MEP-BMS-1095 | 112d | 0d | 11,861.27 | GEN |
| C-MEP-BMS-1075 |  | Installation & Connection of BMS Sensors, Relays, & Valves at level 21 | 20d | 2016-01-09 | 2016-01-31 | C-MEP-BMS-1065, C-MEP-PD-1085, C-MEP-PD-1075, C-MEP-FF-854, C-MEP-AC-1748, C-MEP-AC-1728, C-MEP-AC-1738 | 112d | 29d | 14,826.58 | GEN |
| C-MEP-BMS-1085 |  | Installtion & Connection of BMS Racks, Panels etc... at level 21 | 20d | 2016-03-07 | 2016-03-29 | C-MEP-BMS-1075, C-MEP-BMS-985 SS | 191d | 0d | 14,826.58 |  |

Notes:
- C-ELV-CCTV-1055: Expenses: 1 8161.35
- C-ELV-CCTV-1095: Expenses: 1 2769.38
- C-ELV-CCTV-1065: Expenses: 1 19043.1
- C-ELV-CCTV-1075: Expenses: 1 183699
- C-ELV-CCTV-1085: Expenses: 1 7322.52
- C-ELV-CS-1055: Expenses: 1 27356.1
- C-ELV-CS-1095: Expenses: 1 2769.38
- C-ELV-CS-1065: Expenses: 1 82068.4
- C-ELV-CS-1075: Expenses: 1 93342.5
- C-ELV-CS-1085: Expenses: 1 223315
- C-ELV-SMATV-1055: Expenses: 1 4452.18
- C-ELV-SMATV-1095: Expenses: 1 2769.38
- C-ELV-SMATV-1065: Expenses: 1 10388.4
- C-ELV-SMATV-1075: Expenses: 1 6537.45
- C-ELV-SMATV-1085: Expenses: 1 2419.21
- C-MEP-BMS-1055: Expenses: 1 8895.95
- C-MEP-BMS-1065: Expenses: 1 11861.3
- C-MEP-BMS-1075: Expenses: 1 14826.6
- C-MEP-BMS-1085: Expenses: 1 14826.6

| ID | WBS | Activity | Duration | Start | Finish | Predecessors | Total float | Free float | Cost | AREA |
| --- | --- | --- | --- | --- | --- | --- | --- | --- | --- | --- |
|  | 8 | **MEP - Level 22** |  | 2015-09-14 | 2016-10-26 |  |  |  |  |  |
|  | 1 | **Electrical** |  | 2015-10-04 | 2016-10-26 |  |  |  |  |  |
| C-MEP-E-1446 |  | Installation of first Electrical Fix Conduits, Boxes within block work & Gypsum Boards at level 22 | 20d | 2015-10-04 | 2015-10-26 | C-F-P-723, C-MEP-E-966 | 98d | 14d | 55,235.7 | GEN |
| C-MEP-E-1496 |  | Installation of Cable Trays & Truncking at level 22 | 18d | 2015-10-22 | 2015-11-11 | C-MEP-FF-964 SS+10d, C-MEP-PD-1205 SS+5d, C-MEP-E-1016 | 84d | 0d | 21,017.55 |  |
| C-MEP-E-1456 |  | Installation of Electrical Second Fix (Cabling & Wirring etc..). at level 22 | 18d | 2015-11-12 | 2015-12-02 | C-MEP-E-1446, C-MEP-E-1496, C-MEP-E-976 | 84d | 0d | 190,528.33 | GEN |
| C-MEP-E-1466 |  | Installation & Connection of Electrical DB's, SMDB's at level 22 | 16d | 2015-12-03 | 2015-12-22 | C-MEP-E-1456, C-MEP-E-1226 | 84d | 7d | 78,921.15 | GEN |
| C-MEP-E-1486 |  | Installation & Connection of Lighting Fixtures & Sockets at level 22 | 14d | 2016-10-11 | 2016-10-26 | C-MEP-E-1456, C-F-CF-1717, C-F-CF-1707, C-F-WF-974, C-F-WF-984, C-MEP-E-1126, C-F-P-LSF-522 FF | 90d | 0d | 71,857.69 | GEN |
|  | 2 | **HVAC** |  | 2015-09-14 | 2016-08-08 |  |  |  |  |  |
| C-MEP-AC-1928 |  | Installation of Ductwork, Insulation & Dampers at level 22 | 23d | 2015-09-14 | 2015-10-13 | C-F-P-723 SS, C-MEP-AC-1448, SD-CS-L22-612 | 87d | 0d | 140,612.08 | GEN |
| C-MEP-AC-1948 |  | Installation of Chilled Water Pipes & Valves at level 22 | 25d | 2015-09-29 | 2015-10-27 | C-MEP-AC-1928 SS+10d, C-MEP-AC-1068 | 140d | 30d | 30,741.92 | GEN |
| C-MEP-AC-1988 |  | Installation of HVAC equipments AHU's, FCU's, ERU's, VAV's, CAV's & Fans at level 22 | 25d | 2015-11-17 | 2015-12-15 | C-MEP-AC-1978 FF, C-MEP-AC-1968 FF, C-MEP-AC-1928 SS | 134d | 19d | 56,229.62 | GEN |
| C-MEP-AC-1968 |  | Pressure testing & Insulation of Chilled Water Pipes at level 22 | 12d | 2015-12-02 | 2015-12-15 | C-MEP-AC-1948, C-MEP-AC-1728 | 134d | 0d | 8,821.1 | GEN |
| C-MEP-AC-1978 |  | Pressure testing of Ductwork at level 22 | 8d | 2015-12-03 | 2015-12-12 | C-MEP-AC-1928, C-MEP-AC-1738 | 114d | 0d |  | GEN |
| C-MEP-AC-1938 |  | Installation of Silencers, Attenuators, Isolators & Detectors at level 22 | 12d | 2015-12-13 | 2015-12-27 | C-MEP-AC-1978, C-MEP-AC-1698 SS | 145d | 8d | 28,274.51 | GEN |
| C-MEP-AC-1958 |  | Installation of Chilled Water Pipes Control Devices & Isolator at level 22 | 8d | 2015-12-16 | 2015-12-26 | C-MEP-AC-1968 | 146d | 67d | 2,889.38 | GEN |
| C-MEP-AC-1998 |  | Installation of Grilles, Diffusers & Controller at level 22 | 12d | 2016-07-26 | 2016-08-08 | C-MEP-AC-1988, C-F-CF-1717, C-F-CF-1707, C-F-WF-984 FF, C-F-CF-1707 FF, C-F-WF-974 FF, C-MEP-AC-1518 | 134d | 1d | 55,880.87 | GEN |
|  | 3 | **Fire Fighting** |  | 2015-09-29 | 2016-04-28 |  |  |  |  |  |
| C-MEP-FF-964 |  | Installation of FIre fighting Pipes at level 22 | 25d | 2015-09-29 | 2015-10-27 | C-MEP-AC-1928 SS+10d, SD-CS-L22-632 | 94d | 0d | 45,406.88 | GEN |
| C-MEP-FF-984 |  | Pressure testing of fire fighting pipes at level 22 | 8d | 2015-10-28 | 2015-11-05 | C-MEP-FF-964 | 148d | 0d | 5,280.67 | GEN |
| C-MEP-FF-974 |  | Installation of fire Fighting Valves at level 22 | 20d | 2015-11-07 | 2015-11-29 | C-MEP-FF-984 | 148d | 33d | 18,427.34 | GEN |
| C-MEP-FF-994 |  | Installation of Fire Fighting Sprinklers & Fire hose Cabinets & Extinguishers at level 22 | 14d | 2016-04-13 | 2016-04-28 | C-MEP-FF-974, C-F-CF-1707, C-F-CF-1697, C-MEP-FF-984 | 172d | 0d | 64,097.37 | GEN |
|  | 4 | **Plumbing & Drainage** |  | 2015-10-17 | 2016-08-02 |  |  |  |  |  |
| C-MEP-PD-1205 |  | Installation of Water Pipes & Valves (Hot & Cold atc..) at level 22 | 20d | 2015-10-17 | 2015-11-08 | C-MEP-FF-964 SS, C-F-P-733, SD-CS-L22-672 | 84d | 0d | 83,874.06 | GEN |
| C-MEP-PD-1215 |  | Installation drainage Pipes at level 22 | 25d | 2015-10-17 | 2015-11-14 | C-MEP-PD-1205 SS, C-MEP-PD-1065 SS | 129d | 0d | 30,204.4 | GEN |
| C-MEP-PD-1225 |  | Pressure testing & Insullation of water pipes at level 22 | 8d | 2015-11-09 | 2015-11-17 | C-MEP-PD-1205, C-MEP-PD-1075 SS | 157d | 14d | 9,573.63 | GEN |
| C-MEP-PD-1235 |  | Pressure testing of drainage pipes at level 22 | 8d | 2015-11-15 | 2015-11-23 | C-MEP-PD-1215 | 153d | 38d | 1,651.42 | GEN |
| C-MEP-PD-1245 |  | Installation of Outlets, Drains, Gullies, Cowls, & Clean out at level 22 | 20d | 2016-07-11 | 2016-08-02 | C-MEP-PD-1225, C-MEP-PD-1225 FF, C-F-FF-974, C-F-WF-974, C-F-FF-974 FF, C-F-WF-994, C-F-WF-974 FF, C-F-DW-974, C-MEP-PD-1145, C-F-P-LSF-522 FF | 137d | 0d | 13,120.28 | GEN |

Notes:
- C-MEP-E-1446: Expenses: 1 55235.7
- C-MEP-E-1496: Expenses: 1 21017.5
- C-MEP-E-1456: Expenses: 1 57962.7; 2 132566
- C-MEP-E-1466: Expenses: 1 78921.1
- C-MEP-E-1486: Expenses: 1 71857.7
- C-MEP-AC-1928: Expenses: 1 140612
- C-MEP-AC-1948: Expenses: 1 30741.9
- C-MEP-AC-1988: Expenses: 1 56229.6
- C-MEP-AC-1968: Expenses: 1 8821.1
- C-MEP-AC-1938: Expenses: 1 28274.5
- C-MEP-AC-1958: Expenses: 1 2889.38
- C-MEP-AC-1998: Expenses: 1 55880.9
- C-MEP-FF-964: Expenses: 1 45406.9
- C-MEP-FF-984: Expenses: 1 5280.67
- C-MEP-FF-974: Expenses: 1 18427.3
- C-MEP-FF-994: Expenses: 1 64097.4
- C-MEP-PD-1205: Expenses: 1 83874.1
- C-MEP-PD-1215: Expenses: 1 30204.4
- C-MEP-PD-1225: Expenses: 1 9573.63
- C-MEP-PD-1235: Expenses: 1 1651.42
- C-MEP-PD-1245: Expenses: 1 13120.3

| ID | WBS | Activity | Duration | Start | Finish | Predecessors | Total float | Free float | Cost | AREA |
| --- | --- | --- | --- | --- | --- | --- | --- | --- | --- | --- |
|  | 7 | **ELV systems** |  | 2015-10-17 | 2016-08-06 |  |  |  |  |  |
|  | 1 | **Room Management System** |  | 2015-10-17 | 2016-05-22 |  |  |  |  |  |
| C-ELV-RMS-1205 |  | Installation of RMS first fix (Conduits, Boxes within block work , Gypsum Boards & Raised FLooring at level 22 | 20d | 2015-10-17 | 2015-11-08 | C-F-P-733, C-F-P-723, SD-CS-L22-852, C-ELV-RMS-1055 SS | 95d | 14d | 11,902.78 | GEN |
| C-ELV-RMS-1245 |  | Installation of Cable Trays & Truncking at level 22 | 25d | 2015-10-28 | 2015-11-25 | C-ELV-CS-1245 SS+5d | 115d | 0d | 2,769.38 |  |
| C-ELV-RMS-1215 |  | Installation of second fix (Cabling & Wirring etc..) at level 22 | 25d | 2015-11-26 | 2015-12-26 | C-ELV-RMS-1205, C-ELV-RMS-1245 | 121d | 0d | 11,902.78 | GEN |
| C-ELV-RMS-1225 |  | Installation & Connection of ethernets & HVAC thermostates etc.. at level 22 | 25d | 2015-12-27 | 2016-01-24 | C-ELV-RMS-1215 | 121d | 42d | 27,773.16 | GEN |
| C-ELV-RMS-1235 |  | Installtion & Connection of Panels, Controller, switches, server etc..) at level 22 | 20d | 2016-04-30 | 2016-05-22 | C-ELV-RMS-1225, C-ELV-RMS-1085 SS | 175d | 0d | 27,773.16 |  |
|  | 12 | **Fire Alarm & Detection System** |  | 2015-11-09 | 2016-04-27 |  |  |  |  |  |
| C-ELV-FA-1205 |  | Installation of FA first Fix Conduits, Boxes within block work , Gypsum Boards & Raised FLooring at level 22 | 20d | 2015-11-09 | 2015-12-01 | C-F-P-733, C-F-P-723, C-ELV-FA-1055 | 95d | 0d | 13,660.92 | GEN |
| C-ELV-FA-1245 |  | Installation of Cable Trays & Truncking at level 22 | 25d | 2015-11-09 | 2015-12-07 | C-ELV-MSPA-1245 SS+5d, SD-CS-L22-892 | 115d | 0d | 2,769.38 |  |
| C-ELV-FA-1215 |  | Installation of second fix (Cabling & Wirring etc..) at level 22 | 20d | 2015-12-08 | 2015-12-31 | C-ELV-FA-1205, C-ELV-FA-1245 | 116d | 0d | 22,768.2 | GEN |
| C-ELV-FA-1225 |  | Installation & Connection of heat detector, smoke detector, flame detector etc.. at level 22 | 25d | 2016-01-02 | 2016-01-30 | C-ELV-FA-1215 | 116d | 37d | 27,321.84 | GEN |
| C-ELV-FA-1235 |  | Installtion & Connection of Racks & Panels at level 22 | 20d | 2016-04-05 | 2016-04-27 | C-ELV-FA-1225, C-ELV-FA-1085 SS | 156d | 0d | 27,321.84 |  |
|  | 2 | **Music System & Public Address System** |  | 2015-11-03 | 2016-03-29 |  |  |  |  |  |
| C-ELV-MSPA-1245 |  | Installation of Cable Trays & Truncking at level 22 | 25d | 2015-11-03 | 2015-12-01 | C-ELV-RMS-1245 SS+5d | 115d | 0d | 2,769.38 |  |
| C-ELV-MSPA-1205 |  | Installation of MS/PA first fix (Conduits, Boxes within block work, Gypsum Boards & Raised FLooring at level 22 | 20d | 2015-12-14 | 2016-01-06 | C-F-P-733, C-F-P-723, SD-CS-L22-872, C-ELV-MSPA-1055 SS | 65d | 0d | 6,994.34 | GEN |
| C-ELV-MSPA-1215 |  | Installation of second fix (Cabling & Wirring etc..) at level 22 | 25d | 2016-01-07 | 2016-02-04 | C-ELV-MSPA-1205, C-ELV-MSPA-1245 | 86d | 0d | 6,994.34 | GEN |
| C-ELV-MSPA-1225 |  | Installation & Connection of speakers, Amplifier & Controller at level 22 | 25d | 2016-02-06 | 2016-03-06 | C-ELV-MSPA-1215 | 86d | 0d | 16,320.12 | GEN |
| C-ELV-MSPA-1235 |  | Installtion & Connection of Media hub, panels and processor at level 22 | 20d | 2016-03-07 | 2016-03-29 | C-ELV-MSPA-1225, C-ELV-MSPA-1085 SS | 201d | 0d | 16,320.12 |  |
|  | 3 | **IP CCTV & Access Control System** |  | 2015-10-17 | 2016-05-07 |  |  |  |  |  |
| C-ELV-CCTV-1205 |  | Installation of CCTV first Fix Conduits, Boxes within block work, Gypsum Boards & Raised FLooring at level 22 | 20d | 2015-10-17 | 2015-11-08 | C-F-P-733, C-F-P-723, SD-CS-L22-912, C-ELV-CCTV-1055 SS | 107d | 14d | 8,161.35 | GEN |
| C-ELV-CCTV-1245 |  | Installation of Cable Trays & Truncking at level 22 | 25d | 2015-11-15 | 2015-12-13 | C-ELV-FA-1245 SS+5d | 115d | 0d | 2,769.38 |  |
| C-ELV-CCTV-1215 |  | Installation of second fix (Cabling & Wirring etc..) at level 22 | 20d | 2015-12-14 | 2016-01-06 | C-ELV-CCTV-1205, C-ELV-CCTV-1245 | 118d | 0d | 19,043.14 | GEN |
| C-ELV-CCTV-1225 |  | Installation & Connection of Camera's & Alarms at level 22 | 18d | 2016-01-07 | 2016-01-27 | C-ELV-CCTV-1215 | 118d | 39d | 183,698.91 | GEN |
| C-ELV-CCTV-1235 |  | Installtion & Connection of Racks, Panels etc... at level 22 | 25d | 2016-04-09 | 2016-05-07 | C-ELV-CCTV-1225 FF, C-ELV-CCTV-1085 SS | 123d | 0d | 7,322.52 |  |

Notes:
- C-ELV-RMS-1205: Expenses: 1 11902.8
- C-ELV-RMS-1245: Expenses: 1 2769.38
- C-ELV-RMS-1215: Expenses: 1 11902.8
- C-ELV-RMS-1225: Expenses: 1 27773.2
- C-ELV-RMS-1235: Expenses: 1 27773.2
- C-ELV-FA-1205: Expenses: 1 13660.9
- C-ELV-FA-1245: Expenses: 1 2769.38
- C-ELV-FA-1215: Expenses: 1 22768.2
- C-ELV-FA-1225: Expenses: 1 27321.8
- C-ELV-FA-1235: Expenses: 1 27321.8
- C-ELV-MSPA-1245: Expenses: 1 2769.38
- C-ELV-MSPA-1205: Expenses: 1 6994.34
- C-ELV-MSPA-1215: Expenses: 1 6994.34
- C-ELV-MSPA-1225: Expenses: 1 16320.1
- C-ELV-MSPA-1235: Expenses: 1 16320.1
- C-ELV-CCTV-1205: Expenses: 1 8161.35
- C-ELV-CCTV-1245: Expenses: 1 2769.38
- C-ELV-CCTV-1215: Expenses: 1 19043.1
- C-ELV-CCTV-1225: Expenses: 1 183699
- C-ELV-CCTV-1235: Expenses: 1 7322.52

| ID | WBS | Activity | Duration | Start | Finish | Predecessors | Total float | Free float | Cost | AREA |
| --- | --- | --- | --- | --- | --- | --- | --- | --- | --- | --- |
|  | 7 | **Communication System** |  | 2015-10-17 | 2016-08-06 |  |  |  |  |  |
| C-ELV-CS-1205 |  | Installation of CS first fix (Conduits, Boxes within block work, Gypsum Boards & Raised FLooring at level 22 | 20d | 2015-10-17 | 2015-11-08 | C-F-P-733, C-F-P-723, SD-CS-L22-832, C-ELV-CS-1055 SS | 95d | 3d | 27,356.12 | GEN |
| C-ELV-CS-1245 |  | Installation of Cable Trays & Truncking at level 22 | 18d | 2015-10-22 | 2015-11-11 | C-MEP-E-1496 SS, C-ELV-CS-1095 SS | 114d | 0d | 2,769.38 |  |
| C-ELV-CS-1215 |  | Installation of second fix (Cabling & Wirring etc..) at level 22 | 25d | 2015-11-12 | 2015-12-10 | C-ELV-CS-1205, C-ELV-CS-1245 | 133d | 0d | 82,068.35 | GEN |
| C-ELV-CS-1225 |  | Installation & Connection of Wireless Access points & IP dect phone & RJ 45 at level 22 | 25d | 2015-12-12 | 2016-01-10 | C-ELV-CS-1215 | 133d | 54d | 93,342.54 | GEN |
| C-ELV-CS-1235 |  | Installtion & Connection of Controller & Instrumentation at level 22 | 20d | 2016-07-14 | 2016-08-06 | C-ELV-CS-1225, C-ELV-CS-1085 SS | 125d | 0d | 223,314.69 |  |
|  | 4 | **IP, SMATV & QAM Television System** |  | 2015-11-09 | 2016-03-22 |  |  |  |  |  |
| C-ELV-SMATV-1205 |  | Installation of SMATV first Fix Conduits, Boxes within block work , Gypsum Boards & Raised FLooring at level 22 | 20d | 2015-11-09 | 2015-12-01 | C-F-P-733, C-F-P-723, SD-CS-L22-932, C-ELV-SMATV-1055 | 106d | 0d | 4,452.18 | GEN |
| C-ELV-SMATV-1245 |  | Installation of Cable Trays & Truncking at level 22 | 25d | 2015-11-21 | 2015-12-20 | C-ELV-CCTV-1245 SS+5d | 115d | 0d | 2,769.38 |  |
| C-ELV-SMATV-1215 |  | Installation of second fix (Cabling & Wirring etc..) at level 22 | 16d | 2015-12-21 | 2016-01-07 | C-ELV-SMATV-1205, C-ELV-SMATV-1245 | 117d | 0d | 10,388.41 | GEN |
| C-ELV-SMATV-1225 |  | Installation & Connection of Outlets, switches and splitter at level 22 | 18d | 2016-01-09 | 2016-01-28 | C-ELV-SMATV-1215 | 117d | 25d | 6,537.45 | GEN |
| C-ELV-SMATV-1235 |  | Installtion & Connection of SMATV & QAM fiber & receiver at level 22 | 20d | 2016-02-29 | 2016-03-22 | C-ELV-SMATV-1225, C-ELV-SMATV-1085 SS | 167d | 0d | 2,419.21 |  |
|  | 5 | **BMS system** |  | 2015-10-17 | 2016-03-29 |  |  |  |  |  |
| C-MEP-BMS-1205 |  | Installation of BMS first Fix Conduits, Boxes within block work , Gypsum Boards & Raised FLooring at level 22 | 20d | 2015-10-17 | 2015-11-08 | C-F-P-733, C-F-P-723, SD-CS-L22-812, C-MEP-BMS-1055 SS | 109d | 14d | 8,895.95 | GEN |
| C-MEP-BMS-1245 |  | Installation of Cable trays & Trunking at level 22 | 20d | 2015-11-26 | 2015-12-20 | C-ELV-SMATV-1245 SS+5d | 115d | 0d |  |  |
| C-MEP-BMS-1215 |  | Installation of BMS Cabling & Wirring at level 22 | 16d | 2015-12-21 | 2016-01-07 | C-MEP-BMS-1205, C-MEP-BMS-1245 | 115d | 0d | 11,861.27 | GEN |
| C-MEP-BMS-1225 |  | Installation & Connection of BMS Sensors, Relays, & Valves at level 22 | 20d | 2016-01-09 | 2016-01-31 | C-MEP-BMS-1215, C-MEP-PD-1235, C-MEP-PD-1225, C-MEP-FF-974, C-MEP-AC-1988, C-MEP-AC-1968, C-MEP-AC-1978 | 115d | 29d | 14,826.58 | GEN |
| C-MEP-BMS-1235 |  | Installtion & Connection of BMS Racks, Panels etc... at level 22 | 20d | 2016-03-07 | 2016-03-29 | C-MEP-BMS-1225, C-MEP-BMS-1085 SS | 191d | 0d | 14,826.58 |  |
|  | 7 | **MEP - Level 23** |  | 2015-10-04 | 2016-11-12 |  |  |  |  |  |
|  | 1 | **Electrical** |  | 2015-10-20 | 2016-11-12 |  |  |  |  |  |
| C-MEP-E-1806 |  | Installation of first Electrical Fix Conduits, Boxes within block work & Gypsum Boards at level 23 | 20d | 2015-10-20 | 2015-11-11 | C-F-P-903, C-MEP-E-1326 | 104d | 14d | 55,235.7 | GEN |
| C-MEP-E-1856 |  | Installation of Cable Trays & Truncking at level 23 | 18d | 2015-11-08 | 2015-11-28 | C-MEP-FF-1204 SS+10d, C-MEP-PD-1505 SS+5d, C-MEP-E-1376 | 82d | 0d | 21,017.55 |  |
| C-MEP-E-1816 |  | Installation of Electrical Second Fix (Cabling & Wirring etc..). at level 23 | 18d | 2015-11-29 | 2015-12-20 | C-MEP-E-1806, C-MEP-E-1856, C-MEP-E-1336 | 96d | 0d | 190,528.33 | GEN |
| C-MEP-E-1826 |  | Installation & Connection of Electrical DB's, SMDB's at level 23 | 16d | 2015-12-21 | 2016-01-07 | C-MEP-E-1816, C-MEP-E-926 SS | 102d | 15d | 78,921.15 | GEN |
| C-MEP-E-1846 |  | Installation & Connection of Lighting Fixtures & Sockets at level 23 | 14d | 2016-10-27 | 2016-11-12 | C-MEP-E-1816, C-F-CF-2137, C-F-CF-2127, C-F-WF-1214, C-F-WF-1224, C-MEP-E-1066, C-F-P-LSF-532 FF | 86d | 0d | 71,857.69 | GEN |

Notes:
- C-ELV-CS-1205: Expenses: 1 27356.1
- C-ELV-CS-1245: Expenses: 1 2769.38
- C-ELV-CS-1215: Expenses: 1 82068.4
- C-ELV-CS-1225: Expenses: 1 93342.5
- C-ELV-CS-1235: Expenses: 1 223315
- C-ELV-SMATV-1205: Expenses: 1 4452.18
- C-ELV-SMATV-1245: Expenses: 1 2769.38
- C-ELV-SMATV-1215: Expenses: 1 10388.4
- C-ELV-SMATV-1225: Expenses: 1 6537.45
- C-ELV-SMATV-1235: Expenses: 1 2419.21
- C-MEP-BMS-1205: Expenses: 1 8895.95
- C-MEP-BMS-1215: Expenses: 1 11861.3
- C-MEP-BMS-1225: Expenses: 1 14826.6
- C-MEP-BMS-1235: Expenses: 1 14826.6
- C-MEP-E-1806: Expenses: 1 55235.7
- C-MEP-E-1856: Expenses: 1 21017.5
- C-MEP-E-1816: Expenses: 1 57962.7; 2 132566
- C-MEP-E-1826: Expenses: 1 78921.1
- C-MEP-E-1846: Expenses: 1 71857.7

| ID | WBS | Activity | Duration | Start | Finish | Predecessors | Total float | Free float | Cost | AREA |
| --- | --- | --- | --- | --- | --- | --- | --- | --- | --- | --- |
|  | 2 | **HVAC** |  | 2015-10-04 | 2016-08-17 |  |  |  |  |  |
| C-MEP-AC-2408 |  | Installation of Ductwork, Insulation & Dampers at level 23 | 23d | 2015-10-04 | 2015-10-29 | C-F-P-903 SS, C-MEP-AC-1368, SD-CS-L23-632 | 59d | 0d | 140,612.08 | GEN |
| C-MEP-AC-2428 |  | Installation of Chilled Water Pipes & Valves at level 23 | 25d | 2015-10-15 | 2015-11-12 | C-MEP-AC-2408 SS+10d, C-MEP-AC-1308 | 135d | 23d | 30,741.92 | GEN |
| C-MEP-AC-2468 |  | Installation of HVAC equipments AHU's, FCU's, ERU's, VAV's, CAV's & Fans at level 23 | 25d | 2015-12-01 | 2015-12-30 | C-MEP-AC-2458 FF, C-MEP-AC-2448 FF, C-MEP-AC-2408 SS | 141d | 21d | 60,603.46 | GEN |
| C-MEP-AC-2458 |  | Pressure testing of Ductwork at level 23 | 8d | 2015-12-13 | 2015-12-22 | C-MEP-AC-2408, C-MEP-AC-1978 | 114d | 0d |  | GEN |
| C-MEP-AC-2448 |  | Pressure testing & Insulation of Chilled Water Pipes at level 23 | 12d | 2015-12-16 | 2015-12-30 | C-MEP-AC-2428, C-MEP-AC-1968 | 141d | 0d | 8,821.1 | GEN |
| C-MEP-AC-2418 |  | Installation of Silencers, Attenuators, Isolators & Detectors at level 23 | 12d | 2015-12-23 | 2016-01-05 | C-MEP-AC-2458, C-MEP-AC-1938 SS | 156d | 66d | 28,274.51 | GEN |
| C-MEP-AC-2438 |  | Installation of Chilled Water Pipes Control Devices & Isolator at level 23 | 8d | 2015-12-31 | 2016-01-09 | C-MEP-AC-2448 | 153d | 63d | 2,889.38 | GEN |
| C-MEP-AC-2478 |  | Installation of Grilles, Diffusers & Controller at level 23 | 12d | 2016-08-04 | 2016-08-17 | C-MEP-AC-2468, C-F-CF-2137, C-F-CF-2127, C-F-WF-1224 FF, C-F-CF-2127 FF, C-F-WF-1214 FF, C-MEP-AC-1438 | 126d | 0d | 55,880.87 | GEN |
|  | 3 | **Fire Fighting** |  | 2015-10-15 | 2016-05-08 |  |  |  |  |  |
| C-MEP-FF-1204 |  | Installation of FIre fighting Pipes at level 23 | 25d | 2015-10-15 | 2015-11-12 | C-MEP-AC-2408 SS+10d, SD-CS-L23-652 | 92d | 0d | 45,406.88 | GEN |
| C-MEP-FF-1224 |  | Pressure testing of fire fighting pipes at level 23 | 8d | 2015-11-14 | 2015-11-22 | C-MEP-FF-1204 | 153d | 0d | 5,280.67 | GEN |
| C-MEP-FF-1214 |  | Installation of fire Fighting Valves at level 23 | 20d | 2015-11-23 | 2015-12-15 | C-MEP-FF-1224 | 153d | 33d | 18,427.34 | GEN |
| C-MEP-FF-1234 |  | Installation of Fire Fighting Sprinklers & Fire hose Cabinets & Extinguishers at level 23 | 14d | 2016-04-23 | 2016-05-08 | C-MEP-FF-1214, C-F-CF-2127, C-F-CF-2117, C-MEP-FF-1224 | 164d | 0d | 64,097.37 | GEN |
|  | 4 | **Plumbing & Drainage** |  | 2015-11-02 | 2016-08-11 |  |  |  |  |  |
| C-MEP-PD-1505 |  | Installation of Water Pipes & Valves (Hot & Cold atc..) at level 23 | 20d | 2015-11-02 | 2015-11-24 | C-MEP-FF-1204 SS, C-F-P-913, SD-CS-L23-692 | 82d | 0d | 83,874.06 | GEN |
| C-MEP-PD-1515 |  | Installation drainage Pipes at level 23 | 25d | 2015-11-02 | 2015-11-30 | C-MEP-PD-1505 SS, C-MEP-PD-1215 SS | 115d | 0d | 30,204.4 | GEN |
| C-MEP-PD-1525 |  | Pressure testing & Insullation of water pipes at level 23 | 8d | 2015-11-25 | 2015-12-03 | C-MEP-PD-1505, C-MEP-PD-1225 SS | 143d | 0d | 9,573.63 | GEN |
| C-MEP-PD-1535 |  | Pressure testing of drainage pipes at level 23 | 8d | 2015-12-01 | 2015-12-09 | C-MEP-PD-1515 | 158d | 38d | 1,651.42 | GEN |
| C-MEP-PD-1545 |  | Installation of Outlets, Drains, Gullies, Cowls, & Clean out at level 23 | 20d | 2016-07-20 | 2016-08-11 | C-MEP-PD-1525, C-MEP-PD-1525 FF, C-F-FF-1214, C-F-WF-1214, C-F-FF-1214 FF, C-F-WF-1234, C-F-WF-1214 FF, C-F-DW-1214, C-MEP-PD-945, C-F-P-LSF-532 FF | 139d | 10d | 13,120.28 | GEN |
|  | 7 | **ELV systems** |  | 2015-11-02 | 2016-08-06 |  |  |  |  |  |
|  | 1 | **Room Management System** |  | 2015-11-02 | 2016-05-22 |  |  |  |  |  |
| C-ELV-RMS-1505 |  | Installation of RMS first fix (Conduits, Boxes within block work , Gypsum Boards & Raised FLooring at level 23 | 20d | 2015-11-02 | 2015-11-24 | C-F-P-913, C-F-P-903, SD-CS-L23-872, C-ELV-RMS-1205 SS | 81d | 0d | 11,902.78 | GEN |
| C-ELV-RMS-1545 |  | Installation of Cable Trays & Truncking at level 23 | 25d | 2015-11-14 | 2015-12-12 | C-ELV-CS-1545 SS+5d | 120d | 0d | 2,769.38 |  |
| C-ELV-RMS-1515 |  | Installation of second fix (Cabling & Wirring etc..) at level 23 | 25d | 2015-12-13 | 2016-01-11 | C-ELV-RMS-1505, C-ELV-RMS-1545 | 126d | 0d | 11,902.78 | GEN |
| C-ELV-RMS-1525 |  | Installation & Connection of ethernets & HVAC thermostates etc.. at level 23 | 25d | 2016-01-12 | 2016-02-09 | C-ELV-RMS-1515 | 126d | 36d | 27,773.16 | GEN |
| C-ELV-RMS-1535 |  | Installtion & Connection of Panels, Controller, switches, server etc..) at level 23 | 20d | 2016-04-30 | 2016-05-22 | C-ELV-RMS-1525, C-ELV-RMS-1235 SS | 175d | 0d | 27,773.16 |  |

Notes:
- C-MEP-AC-2408: Expenses: 1 140612
- C-MEP-AC-2428: Expenses: 1 30741.9
- C-MEP-AC-2468: Expenses: 1 60603.5
- C-MEP-AC-2448: Expenses: 1 8821.1
- C-MEP-AC-2418: Expenses: 1 28274.5
- C-MEP-AC-2438: Expenses: 1 2889.38
- C-MEP-AC-2478: Expenses: 1 55880.9
- C-MEP-FF-1204: Expenses: 1 45406.9
- C-MEP-FF-1224: Expenses: 1 5280.67
- C-MEP-FF-1214: Expenses: 1 18427.3
- C-MEP-FF-1234: Expenses: 1 64097.4
- C-MEP-PD-1505: Expenses: 1 83874.1
- C-MEP-PD-1515: Expenses: 1 30204.4
- C-MEP-PD-1525: Expenses: 1 9573.63
- C-MEP-PD-1535: Expenses: 1 1651.42
- C-MEP-PD-1545: Expenses: 1 13120.3
- C-ELV-RMS-1505: Expenses: 1 11902.8
- C-ELV-RMS-1545: Expenses: 1 2769.38
- C-ELV-RMS-1515: Expenses: 1 11902.8
- C-ELV-RMS-1525: Expenses: 1 27773.2
- C-ELV-RMS-1535: Expenses: 1 27773.2

| ID | WBS | Activity | Duration | Start | Finish | Predecessors | Total float | Free float | Cost | AREA |
| --- | --- | --- | --- | --- | --- | --- | --- | --- | --- | --- |
|  | 12 | **Fire Alarm & Detection System** |  | 2015-11-09 | 2016-05-21 |  |  |  |  |  |
| C-ELV-FA-1505 |  | Installation of FA first Fix Conduits, Boxes within block work , Gypsum Boards & Raised FLooring at level 23 | 20d | 2015-11-09 | 2015-12-01 | C-F-P-913, C-F-P-903, C-ELV-FA-1205 SS | 95d | 0d | 13,660.92 | GEN |
| C-ELV-FA-1545 |  | Installation of Cable Trays & Truncking at level 23 | 25d | 2015-11-25 | 2015-12-24 | C-ELV-MSPA-1545 SS+5d, SD-CS-L23-912 | 120d | 0d | 2,769.38 |  |
| C-ELV-FA-1515 |  | Installation of second fix (Cabling & Wirring etc..) at level 23 | 20d | 2015-12-26 | 2016-01-17 | C-ELV-FA-1505, C-ELV-FA-1545 | 121d | 0d | 22,768.2 | GEN |
| C-ELV-FA-1525 |  | Installation & Connection of heat detector, smoke detector, flame detector etc.. at level 23 | 25d | 2016-01-18 | 2016-02-16 | C-ELV-FA-1515 | 121d | 31d | 27,321.84 | GEN |
| C-ELV-FA-1535 |  | Installtion & Connection of Racks & Panels at level 23 | 20d | 2016-04-28 | 2016-05-21 | C-ELV-FA-1525, C-ELV-FA-1235 | 156d | 0d | 27,321.84 |  |
|  | 2 | **Music System & Public Address System** |  | 2015-11-19 | 2016-03-29 |  |  |  |  |  |
| C-ELV-MSPA-1545 |  | Installation of Cable Trays & Truncking at level 23 | 25d | 2015-11-19 | 2015-12-17 | C-ELV-RMS-1545 SS+5d | 120d | 0d | 2,769.38 |  |
| C-ELV-MSPA-1505 |  | Installation of MS/PA first fix (Conduits, Boxes within block work, Gypsum Boards & Raised FLooring at level 23 | 20d | 2015-12-14 | 2016-01-06 | C-F-P-913, C-F-P-903, SD-CS-L23-892, C-ELV-MSPA-1205 SS | 65d | 0d | 6,994.34 | GEN |
| C-ELV-MSPA-1515 |  | Installation of second fix (Cabling & Wirring etc..) at level 23 | 25d | 2016-01-07 | 2016-02-04 | C-ELV-MSPA-1505, C-ELV-MSPA-1545 | 105d | 0d | 6,994.34 | GEN |
| C-ELV-MSPA-1525 |  | Installation & Connection of speakers, Amplifier & Controller at level 23 | 25d | 2016-02-06 | 2016-03-06 | C-ELV-MSPA-1515 | 105d | 0d | 16,320.12 | GEN |
| C-ELV-MSPA-1535 |  | Installtion & Connection of Media hub, panels and processor at level 23 | 20d | 2016-03-07 | 2016-03-29 | C-ELV-MSPA-1525, C-ELV-MSPA-1235 SS | 201d | 0d | 16,320.12 |  |
|  | 3 | **IP CCTV & Access Control System** |  | 2015-11-02 | 2016-05-07 |  |  |  |  |  |
| C-ELV-CCTV-1505 |  | Installation of CCTV first Fix Conduits, Boxes within block work, Gypsum Boards & Raised FLooring at level 23 | 20d | 2015-11-02 | 2015-11-24 | C-F-P-913, C-F-P-903, SD-CS-L23-932, C-ELV-CCTV-1205 SS | 93d | 0d | 8,161.35 | GEN |
| C-ELV-CCTV-1545 |  | Installation of Cable Trays & Truncking at level 23 | 25d | 2015-12-01 | 2015-12-30 | C-ELV-FA-1545 SS+5d | 120d | 0d | 2,769.38 |  |
| C-ELV-CCTV-1515 |  | Installation of second fix (Cabling & Wirring etc..) at level 23 | 20d | 2015-12-31 | 2016-01-23 | C-ELV-CCTV-1505, C-ELV-CCTV-1545 | 123d | 0d | 19,043.14 | GEN |
| C-ELV-CCTV-1525 |  | Installation & Connection of Camera's & Alarms at level 23 | 18d | 2016-01-24 | 2016-02-14 | C-ELV-CCTV-1515 | 123d | 33d | 183,698.91 | GEN |
| C-ELV-CCTV-1535 |  | Installtion & Connection of Racks, Panels etc... at level 23 | 25d | 2016-04-09 | 2016-05-07 | C-ELV-CCTV-1525 FF, C-ELV-CCTV-1235 SS | 123d | 0d | 7,322.52 |  |
|  | 7 | **Communication System** |  | 2015-11-02 | 2016-08-06 |  |  |  |  |  |
| C-ELV-CS-1505 |  | Installation of CS first fix (Conduits, Boxes within block work, Gypsum Boards & Raised FLooring at level 23 | 20d | 2015-11-02 | 2015-11-24 | C-F-P-913, C-F-P-903, SD-CS-L23-852, C-ELV-CS-1205 SS | 81d | 0d | 27,356.12 | GEN |
| C-ELV-CS-1545 |  | Installation of Cable Trays & Truncking at level 23 | 25d | 2015-11-08 | 2015-12-06 | C-MEP-E-1856 SS, C-ELV-CS-1245 SS | 100d | 0d | 2,769.38 |  |
| C-ELV-CS-1515 |  | Installation of second fix (Cabling & Wirring etc..) at level 23 | 25d | 2015-12-07 | 2016-01-05 | C-ELV-CS-1505, C-ELV-CS-1545 | 131d | 0d | 82,068.35 | GEN |
| C-ELV-CS-1525 |  | Installation & Connection of Wireless Access points & IP dect phone & RJ 45 at level 23 | 25d | 2016-01-06 | 2016-02-03 | C-ELV-CS-1515 | 131d | 41d | 93,342.54 | GEN |
| C-ELV-CS-1535 |  | Installtion & Connection of Controller & Instrumentation at level 23 | 20d | 2016-07-14 | 2016-08-06 | C-ELV-CS-1525, C-ELV-CS-1235 SS | 125d | 0d | 223,314.69 |  |

Notes:
- C-ELV-FA-1505: Expenses: 1 13660.9
- C-ELV-FA-1545: Expenses: 1 2769.38
- C-ELV-FA-1515: Expenses: 1 22768.2
- C-ELV-FA-1525: Expenses: 1 27321.8
- C-ELV-FA-1535: Expenses: 1 27321.8
- C-ELV-MSPA-1545: Expenses: 1 2769.38
- C-ELV-MSPA-1505: Expenses: 1 6994.34
- C-ELV-MSPA-1515: Expenses: 1 6994.34
- C-ELV-MSPA-1525: Expenses: 1 16320.1
- C-ELV-MSPA-1535: Expenses: 1 16320.1
- C-ELV-CCTV-1505: Expenses: 1 8161.35
- C-ELV-CCTV-1545: Expenses: 1 2769.38
- C-ELV-CCTV-1515: Expenses: 1 19043.1
- C-ELV-CCTV-1525: Expenses: 1 183699
- C-ELV-CCTV-1535: Expenses: 1 7322.52
- C-ELV-CS-1505: Expenses: 1 27356.1
- C-ELV-CS-1545: Expenses: 1 2769.38
- C-ELV-CS-1515: Expenses: 1 82068.4
- C-ELV-CS-1525: Expenses: 1 93342.5
- C-ELV-CS-1535: Expenses: 1 223315

| ID | WBS | Activity | Duration | Start | Finish | Predecessors | Total float | Free float | Cost | AREA |
| --- | --- | --- | --- | --- | --- | --- | --- | --- | --- | --- |
|  | 4 | **IP, SMATV & QAM Television System** |  | 2015-11-09 | 2016-03-22 |  |  |  |  |  |
| C-ELV-SMATV-1505 |  | Installation of SMATV first Fix Conduits, Boxes within block work , Gypsum Boards & Raised FLooring at level 23 | 20d | 2015-11-09 | 2015-12-01 | C-F-P-913, C-F-P-903, SD-CS-L23-952, C-ELV-SMATV-1205 SS | 106d | 0d | 4,452.18 | GEN |
| C-ELV-SMATV-1545 |  | Installation of Cable Trays & Truncking at level 23 | 25d | 2015-12-07 | 2016-01-05 | C-ELV-CCTV-1545 SS+5d | 120d | 0d | 2,769.38 |  |
| C-ELV-SMATV-1515 |  | Installation of second fix (Cabling & Wirring etc..) at level 23 | 16d | 2016-01-06 | 2016-01-24 | C-ELV-SMATV-1505, C-ELV-SMATV-1545 | 122d | 0d | 10,388.41 | GEN |
| C-ELV-SMATV-1525 |  | Installation & Connection of Outlets, switches and splitter at level 23 | 18d | 2016-01-25 | 2016-02-15 | C-ELV-SMATV-1515 | 122d | 11d | 6,537.45 | GEN |
| C-ELV-SMATV-1535 |  | Installtion & Connection of SMATV & QAM fiber & receiver at level 23 | 20d | 2016-02-29 | 2016-03-22 | C-ELV-SMATV-1525, C-ELV-SMATV-1235 SS | 167d | 0d | 2,419.21 |  |
|  | 5 | **BMS system** |  | 2015-11-02 | 2016-03-29 |  |  |  |  |  |
| C-MEP-BMS-1505 |  | Installation of BMS first Fix Conduits, Boxes within block work , Gypsum Boards & Raised FLooring at level 23 | 20d | 2015-11-02 | 2015-11-24 | C-F-P-913, C-F-P-903, SD-CS-L23-832, C-MEP-BMS-1205 SS | 95d | 0d | 8,895.95 | GEN |
| C-MEP-BMS-1545 |  | Installation of Cable trays & Trunking at level 23 | 20d | 2015-12-13 | 2016-01-05 | C-ELV-SMATV-1545 SS+5d | 120d | 0d |  |  |
| C-MEP-BMS-1515 |  | Installation of BMS Cabling & Wirring at level 23 | 16d | 2016-01-06 | 2016-01-24 | C-MEP-BMS-1505, C-MEP-BMS-1545 | 120d | 0d | 11,861.27 | GEN |
| C-MEP-BMS-1525 |  | Installation & Connection of BMS Sensors, Relays, & Valves at level 23 | 20d | 2016-01-25 | 2016-02-17 | C-MEP-BMS-1515, C-MEP-PD-1535, C-MEP-PD-1525, C-MEP-FF-1214, C-MEP-AC-2468, C-MEP-AC-2448, C-MEP-AC-2458 | 120d | 15d | 14,826.58 | GEN |
| C-MEP-BMS-1535 |  | Installtion & Connection of BMS Racks, Panels etc... at level 23 | 20d | 2016-03-07 | 2016-03-29 | C-MEP-BMS-1525, C-MEP-BMS-1235 SS | 191d | 0d | 14,826.58 |  |
|  | 6 | **MEP - Level 24** |  | 2015-10-04 | 2016-09-03 |  |  |  |  |  |
|  | 1 | **Electrical** |  | 2015-10-20 | 2016-09-03 |  |  |  |  |  |
| C-MEP-E-1506 |  | Installation of first Electrical Fix Conduits, Boxes within block work & Gypsum Boards at level 24 | 20d | 2015-10-20 | 2015-11-11 | C-F-P-753, C-MEP-E-1086 | 104d | 14d | 55,235.7 | GEN |
| C-MEP-E-1556 |  | Installation of Cable Trays & Truncking at level 24 | 18d | 2015-11-08 | 2015-11-28 | C-MEP-FF-1004 SS+10d, C-MEP-PD-1255 SS+5d, C-MEP-E-1136 | 82d | 0d | 21,017.55 |  |
| C-MEP-E-1516 |  | Installation of Electrical Second Fix (Cabling & Wirring etc..). at level 24 | 18d | 2015-11-29 | 2015-12-20 | C-MEP-E-1506, C-MEP-E-1556, C-MEP-E-1096 | 96d | 0d | 190,528.33 | GEN |
| C-MEP-E-1526 |  | Installation & Connection of Electrical DB's, SMDB's at level 24 | 16d | 2015-12-21 | 2016-01-07 | C-MEP-E-1516, C-MEP-E-1166 SS | 118d | 29d | 78,921.15 | GEN |
| C-MEP-E-1546 |  | Installation & Connection of Lighting Fixtures & Sockets at level 24 | 14d | 2016-08-18 | 2016-09-03 | C-MEP-E-1516, C-F-CF-1787, C-F-CF-1777, C-F-WF-1014, C-F-WF-1024, C-MEP-E-1246, C-F-P-LSF-542 FF | 142d | 16d | 71,857.69 | GEN |
|  | 2 | **HVAC** |  | 2015-10-04 | 2016-08-17 |  |  |  |  |  |
| C-MEP-AC-2008 |  | Installation of Ductwork, Insulation & Dampers at level 24 | 23d | 2015-10-04 | 2015-10-29 | C-F-P-753 SS, C-MEP-AC-1608, SD-CS-L24-652 | 68d | 0d | 140,612.08 | GEN |
| C-MEP-AC-2028 |  | Installation of Chilled Water Pipes & Valves at level 24 | 25d | 2015-10-15 | 2015-11-12 | C-MEP-AC-2008 SS+10d, C-MEP-AC-1788 | 124d | 0d | 30,741.92 | GEN |
| C-MEP-AC-2048 |  | Pressure testing & Insulation of Chilled Water Pipes at level 24 | 12d | 2015-11-14 | 2015-11-26 | C-MEP-AC-2028 | 153d | 0d | 8,821.1 | GEN |
| C-MEP-AC-2038 |  | Installation of Chilled Water Pipes Control Devices & Isolator at level 24 | 8d | 2015-11-28 | 2015-12-06 | C-MEP-AC-2048 | 165d | 91d | 2,889.38 | GEN |
| C-MEP-AC-2068 |  | Installation of HVAC equipments AHU's, FCU's, ERU's, VAV's, CAV's & Fans at level 24 | 25d | 2015-12-02 | 2015-12-31 | C-MEP-AC-2058 FF, C-MEP-AC-2048 FF, C-MEP-AC-2008 SS | 124d | 20d | 53,824.01 | GEN |
| C-MEP-AC-2058 |  | Pressure testing of Ductwork at level 24 | 8d | 2015-12-23 | 2015-12-31 | C-MEP-AC-2008, C-MEP-AC-2458 | 114d | 0d |  | GEN |
| C-MEP-AC-2018 |  | Installation of Silencers, Attenuators, Isolators & Detectors at level 24 | 12d | 2016-01-02 | 2016-01-14 | C-MEP-AC-2058 | 132d | 58d | 28,274.51 | GEN |
| C-MEP-AC-2078 |  | Installation of Grilles, Diffusers & Controller at level 24 | 12d | 2016-08-04 | 2016-08-17 | C-MEP-AC-2068, C-F-CF-1787, C-F-CF-1777, C-F-WF-1024 FF, C-F-CF-1777 FF, C-F-WF-1014 FF, C-MEP-AC-1678 SS | 120d | 30d | 55,880.87 | GEN |

Notes:
- C-ELV-SMATV-1505: Expenses: 1 4452.18
- C-ELV-SMATV-1545: Expenses: 1 2769.38
- C-ELV-SMATV-1515: Expenses: 1 10388.4
- C-ELV-SMATV-1525: Expenses: 1 6537.45
- C-ELV-SMATV-1535: Expenses: 1 2419.21
- C-MEP-BMS-1505: Expenses: 1 8895.95
- C-MEP-BMS-1515: Expenses: 1 11861.3
- C-MEP-BMS-1525: Expenses: 1 14826.6
- C-MEP-BMS-1535: Expenses: 1 14826.6
- C-MEP-E-1506: Expenses: 1 55235.7
- C-MEP-E-1556: Expenses: 1 21017.5
- C-MEP-E-1516: Expenses: 1 57962.7; 2 132566
- C-MEP-E-1526: Expenses: 1 78921.1
- C-MEP-E-1546: Expenses: 1 71857.7
- C-MEP-AC-2008: Expenses: 1 140612
- C-MEP-AC-2028: Expenses: 1 30741.9
- C-MEP-AC-2048: Expenses: 1 8821.1
- C-MEP-AC-2038: Expenses: 1 2889.38
- C-MEP-AC-2068: Expenses: 1 53824
- C-MEP-AC-2018: Expenses: 1 28274.5
- C-MEP-AC-2078: Expenses: 1 55880.9

| ID | WBS | Activity | Duration | Start | Finish | Predecessors | Total float | Free float | Cost | AREA |
| --- | --- | --- | --- | --- | --- | --- | --- | --- | --- | --- |
|  | 3 | **Fire Fighting** |  | 2015-10-15 | 2016-05-08 |  |  |  |  |  |
| C-MEP-FF-1004 |  | Installation of FIre fighting Pipes at level 24 | 25d | 2015-10-15 | 2015-11-12 | C-MEP-AC-2008 SS+10d, SD-CS-L24-672 | 92d | 0d | 45,406.88 | GEN |
| C-MEP-FF-1024 |  | Pressure testing of fire fighting pipes at level 24 | 8d | 2015-11-14 | 2015-11-22 | C-MEP-FF-1004 | 137d | 0d | 5,280.67 | GEN |
| C-MEP-FF-1014 |  | Installation of fire Fighting Valves at level 24 | 20d | 2015-11-23 | 2015-12-15 | C-MEP-FF-1024 | 137d | 33d | 18,427.34 | GEN |
| C-MEP-FF-1034 |  | Installation of Fire Fighting Sprinklers & Fire hose Cabinets & Extinguishers at level 24 | 14d | 2016-04-23 | 2016-05-08 | C-MEP-FF-1014, C-F-CF-1777, C-F-CF-1767, C-MEP-FF-1024 | 164d | 0d | 64,097.37 | GEN |
|  | 4 | **Plumbing & Drainage** |  | 2015-11-02 | 2016-08-11 |  |  |  |  |  |
| C-MEP-PD-1255 |  | Installation of Water Pipes & Valves (Hot & Cold atc..) at level 24 | 20d | 2015-11-02 | 2015-11-24 | C-MEP-FF-1004 SS, C-F-P-763, SD-CS-L24-712 | 82d | 0d | 83,874.06 | GEN |
| C-MEP-PD-1265 |  | Installation drainage Pipes at level 24 | 25d | 2015-11-02 | 2015-11-30 | C-MEP-PD-1255 SS, C-MEP-PD-1515 SS | 115d | 0d | 30,204.4 | GEN |
| C-MEP-PD-1275 |  | Pressure testing & Insullation of water pipes at level 24 | 8d | 2015-11-25 | 2015-12-03 | C-MEP-PD-1255, C-MEP-PD-1525 SS | 143d | 3d | 9,573.63 | GEN |
| C-MEP-PD-1285 |  | Pressure testing of drainage pipes at level 24 | 8d | 2015-12-01 | 2015-12-09 | C-MEP-PD-1265 | 142d | 38d | 1,651.42 | GEN |
| C-MEP-PD-1295 |  | Installation of Outlets, Drains, Gullies, Cowls, & Clean out at level 24 | 20d | 2016-07-20 | 2016-08-11 | C-MEP-PD-1275, C-MEP-PD-1275 FF, C-F-FF-1014, C-F-WF-1014, C-F-FF-1014 FF, C-F-WF-1034, C-F-WF-1014 FF, C-F-DW-1014, C-MEP-PD-895, C-F-P-LSF-542 FF | 149d | 22d | 13,120.28 | GEN |
|  | 7 | **ELV systems** |  | 2015-11-08 | 2016-08-06 |  |  |  |  |  |
|  | 1 | **Room Management System** |  | 2015-11-14 | 2016-05-22 |  |  |  |  |  |
| C-ELV-RMS-1295 |  | Installation of Cable Trays & Truncking at level 24 | 25d | 2015-11-14 | 2015-12-12 | C-ELV-CS-1295 SS+5d | 104d | 0d | 2,769.38 |  |
| C-ELV-RMS-1255 |  | Installation of RMS first fix (Conduits, Boxes within block work , Gypsum Boards & Raised FLooring at level 24 | 20d | 2015-11-25 | 2015-12-17 | C-F-P-763, C-F-P-753, SD-CS-L24-892, C-ELV-RMS-1505 | 81d | 0d | 11,902.78 | GEN |
| C-ELV-RMS-1265 |  | Installation of second fix (Cabling & Wirring etc..) at level 24 | 25d | 2015-12-20 | 2016-01-17 | C-ELV-RMS-1255, C-ELV-RMS-1295 | 105d | 0d | 11,902.78 | GEN |
| C-ELV-RMS-1275 |  | Installation & Connection of ethernets & HVAC thermostates etc.. at level 24 | 25d | 2016-01-18 | 2016-02-16 | C-ELV-RMS-1265 | 105d | 31d | 27,773.16 | GEN |
| C-ELV-RMS-1285 |  | Installtion & Connection of Panels, Controller, switches, server etc..) at level 24 | 20d | 2016-04-30 | 2016-05-22 | C-ELV-RMS-1275, C-ELV-RMS-1535 SS | 175d | 0d | 27,773.16 |  |
|  | 12 | **Fire Alarm & Detection System** |  | 2015-11-09 | 2016-05-21 |  |  |  |  |  |
| C-ELV-FA-1255 |  | Installation of FA first Fix Conduits, Boxes within block work , Gypsum Boards & Raised FLooring at level 24 | 20d | 2015-11-09 | 2015-12-01 | C-F-P-763, C-F-P-753, C-ELV-FA-1505 SS | 95d | 0d | 13,660.92 | GEN |
| C-ELV-FA-1295 |  | Installation of Cable Trays & Truncking at level 24 | 25d | 2015-11-25 | 2015-12-24 | C-ELV-MSPA-1295 SS+5d, SD-CS-L24-932 | 104d | 0d | 2,769.38 |  |
| C-ELV-FA-1265 |  | Installation of second fix (Cabling & Wirring etc..) at level 24 | 20d | 2015-12-26 | 2016-01-17 | C-ELV-FA-1255, C-ELV-FA-1295 | 105d | 0d | 22,768.2 | GEN |
| C-ELV-FA-1275 |  | Installation & Connection of heat detector, smoke detector, flame detector etc.. at level 24 | 25d | 2016-01-18 | 2016-02-16 | C-ELV-FA-1265 | 105d | 31d | 27,321.84 | GEN |
| C-ELV-FA-1285 |  | Installtion & Connection of Racks & Panels at level 24 | 20d | 2016-04-28 | 2016-05-21 | C-ELV-FA-1275, C-ELV-FA-1535 SS | 156d | 0d | 27,321.84 |  |

Notes:
- C-MEP-FF-1004: Expenses: 1 45406.9
- C-MEP-FF-1024: Expenses: 1 5280.67
- C-MEP-FF-1014: Expenses: 1 18427.3
- C-MEP-FF-1034: Expenses: 1 64097.4
- C-MEP-PD-1255: Expenses: 1 83874.1
- C-MEP-PD-1265: Expenses: 1 30204.4
- C-MEP-PD-1275: Expenses: 1 9573.63
- C-MEP-PD-1285: Expenses: 1 1651.42
- C-MEP-PD-1295: Expenses: 1 13120.3
- C-ELV-RMS-1295: Expenses: 1 2769.38
- C-ELV-RMS-1255: Expenses: 1 11902.8
- C-ELV-RMS-1265: Expenses: 1 11902.8
- C-ELV-RMS-1275: Expenses: 1 27773.2
- C-ELV-RMS-1285: Expenses: 1 27773.2
- C-ELV-FA-1255: Expenses: 1 13660.9
- C-ELV-FA-1295: Expenses: 1 2769.38
- C-ELV-FA-1265: Expenses: 1 22768.2
- C-ELV-FA-1275: Expenses: 1 27321.8
- C-ELV-FA-1285: Expenses: 1 27321.8

| ID | WBS | Activity | Duration | Start | Finish | Predecessors | Total float | Free float | Cost | AREA |
| --- | --- | --- | --- | --- | --- | --- | --- | --- | --- | --- |
|  | 2 | **Music System & Public Address System** |  | 2015-11-19 | 2016-03-29 |  |  |  |  |  |
| C-ELV-MSPA-1295 |  | Installation of Cable Trays & Truncking at level 24 | 25d | 2015-11-19 | 2015-12-17 | C-ELV-RMS-1295 SS+5d | 104d | 0d | 2,769.38 |  |
| C-ELV-MSPA-1255 |  | Installation of MS/PA first fix (Conduits, Boxes within block work, Gypsum Boards & Raised FLooring at level 24 | 20d | 2015-12-14 | 2016-01-06 | C-F-P-763, C-F-P-753, SD-CS-L24-912, C-ELV-MSPA-1505 SS | 65d | 0d | 6,994.34 | GEN |
| C-ELV-MSPA-1265 |  | Installation of second fix (Cabling & Wirring etc..) at level 24 | 25d | 2016-01-07 | 2016-02-04 | C-ELV-MSPA-1255, C-ELV-MSPA-1295 | 89d | 0d | 6,994.34 | GEN |
| C-ELV-MSPA-1275 |  | Installation & Connection of speakers, Amplifier & Controller at level 24 | 25d | 2016-02-06 | 2016-03-06 | C-ELV-MSPA-1265 | 89d | 0d | 16,320.12 | GEN |
| C-ELV-MSPA-1285 |  | Installtion & Connection of Media hub, panels and processor at level 24 | 20d | 2016-03-07 | 2016-03-29 | C-ELV-MSPA-1275, C-ELV-MSPA-1535 SS | 201d | 0d | 16,320.12 |  |
|  | 3 | **IP CCTV & Access Control System** |  | 2015-11-25 | 2016-05-07 |  |  |  |  |  |
| C-ELV-CCTV-1255 |  | Installation of CCTV first Fix Conduits, Boxes within block work, Gypsum Boards & Raised FLooring at level 24 | 20d | 2015-11-25 | 2015-12-17 | C-F-P-763, C-F-P-753, SD-CS-L24-952, C-ELV-CCTV-1505 | 93d | 0d | 8,161.35 | GEN |
| C-ELV-CCTV-1295 |  | Installation of Cable Trays & Truncking at level 24 | 25d | 2015-12-01 | 2015-12-30 | C-ELV-FA-1295 SS+5d | 104d | 0d | 2,769.38 |  |
| C-ELV-CCTV-1265 |  | Installation of second fix (Cabling & Wirring etc..) at level 24 | 20d | 2015-12-31 | 2016-01-23 | C-ELV-CCTV-1255, C-ELV-CCTV-1295 | 107d | 0d | 19,043.14 | GEN |
| C-ELV-CCTV-1275 |  | Installation & Connection of Camera's & Alarms at level 24 | 18d | 2016-01-24 | 2016-02-14 | C-ELV-CCTV-1265 | 107d | 33d | 183,698.91 | GEN |
| C-ELV-CCTV-1285 |  | Installtion & Connection of Racks, Panels etc... at level 24 | 25d | 2016-04-09 | 2016-05-07 | C-ELV-CCTV-1275 FF, C-ELV-CCTV-1535 SS | 123d | 0d | 7,322.52 |  |
|  | 7 | **Communication System** |  | 2015-11-08 | 2016-08-06 |  |  |  |  |  |
| C-ELV-CS-1295 |  | Installation of Cable Trays & Truncking at level 24 | 18d | 2015-11-08 | 2015-11-28 | C-MEP-E-1556 SS, C-ELV-CS-1545 SS | 100d | 0d | 2,769.38 |  |
| C-ELV-CS-1255 |  | Installation of CS first fix (Conduits, Boxes within block work, Gypsum Boards & Raised FLooring at level 24 | 20d | 2015-11-25 | 2015-12-17 | C-F-P-763, C-F-P-753, SD-CS-L24-872, C-ELV-CS-1505 | 81d | 0d | 27,356.12 | GEN |
| C-ELV-CS-1265 |  | Installation of second fix (Cabling & Wirring etc..) at level 24 | 25d | 2015-12-20 | 2016-01-17 | C-ELV-CS-1255, C-ELV-CS-1295 | 105d | 0d | 82,068.35 | GEN |
| C-ELV-CS-1275 |  | Installation & Connection of Wireless Access points & IP dect phone & RJ 45 at level 24 | 25d | 2016-01-18 | 2016-02-16 | C-ELV-CS-1265 | 105d | 31d | 93,342.54 | GEN |
| C-ELV-CS-1285 |  | Installtion & Connection of Controller & Instrumentation at level 24 | 20d | 2016-07-14 | 2016-08-06 | C-ELV-CS-1275, C-ELV-CS-1535 SS | 125d | 0d | 223,314.69 |  |
|  | 4 | **IP, SMATV & QAM Television System** |  | 2015-11-09 | 2016-03-22 |  |  |  |  |  |
| C-ELV-SMATV-1255 |  | Installation of SMATV first Fix Conduits, Boxes within block work , Gypsum Boards & Raised FLooring at level 24 | 20d | 2015-11-09 | 2015-12-01 | C-F-P-763, C-F-P-753, SD-CS-L24-972, C-ELV-SMATV-1505 SS | 106d | 0d | 4,452.18 | GEN |
| C-ELV-SMATV-1295 |  | Installation of Cable Trays & Truncking at level 24 | 25d | 2015-12-07 | 2016-01-05 | C-ELV-CCTV-1295 SS+5d | 104d | 0d | 2,769.38 |  |
| C-ELV-SMATV-1265 |  | Installation of second fix (Cabling & Wirring etc..) at level 24 | 16d | 2016-01-06 | 2016-01-24 | C-ELV-SMATV-1255, C-ELV-SMATV-1295 | 106d | 0d | 10,388.41 | GEN |
| C-ELV-SMATV-1275 |  | Installation & Connection of Outlets, switches and splitter at level 24 | 18d | 2016-01-25 | 2016-02-15 | C-ELV-SMATV-1265 | 106d | 11d | 6,537.45 | GEN |
| C-ELV-SMATV-1285 |  | Installtion & Connection of SMATV & QAM fiber & receiver at level 24 | 20d | 2016-02-29 | 2016-03-22 | C-ELV-SMATV-1275, C-ELV-SMATV-1535 SS | 167d | 0d | 2,419.21 |  |

Notes:
- C-ELV-MSPA-1295: Expenses: 1 2769.38
- C-ELV-MSPA-1255: Expenses: 1 6994.34
- C-ELV-MSPA-1265: Expenses: 1 6994.34
- C-ELV-MSPA-1275: Expenses: 1 16320.1
- C-ELV-MSPA-1285: Expenses: 1 16320.1
- C-ELV-CCTV-1255: Expenses: 1 8161.35
- C-ELV-CCTV-1295: Expenses: 1 2769.38
- C-ELV-CCTV-1265: Expenses: 1 19043.1
- C-ELV-CCTV-1275: Expenses: 1 183699
- C-ELV-CCTV-1285: Expenses: 1 7322.52
- C-ELV-CS-1295: Expenses: 1 2769.38
- C-ELV-CS-1255: Expenses: 1 27356.1
- C-ELV-CS-1265: Expenses: 1 82068.4
- C-ELV-CS-1275: Expenses: 1 93342.5
- C-ELV-CS-1285: Expenses: 1 223315
- C-ELV-SMATV-1255: Expenses: 1 4452.18
- C-ELV-SMATV-1295: Expenses: 1 2769.38
- C-ELV-SMATV-1265: Expenses: 1 10388.4
- C-ELV-SMATV-1275: Expenses: 1 6537.45
- C-ELV-SMATV-1285: Expenses: 1 2419.21

| ID | WBS | Activity | Duration | Start | Finish | Predecessors | Total float | Free float | Cost | AREA |
| --- | --- | --- | --- | --- | --- | --- | --- | --- | --- | --- |
|  | 5 | **BMS system** |  | 2015-11-02 | 2016-03-29 |  |  |  |  |  |
| C-MEP-BMS-1255 |  | Installation of BMS first Fix Conduits, Boxes within block work , Gypsum Boards & Raised FLooring at level 24 | 20d | 2015-11-02 | 2015-11-24 | C-F-P-763, C-F-P-753, SD-CS-L24-852, C-MEP-BMS-1505 SS | 95d | 3d | 8,895.95 | GEN |
| C-MEP-BMS-1295 |  | Installation of Cable trays & Trunking at level 24 | 20d | 2015-12-13 | 2016-01-05 | C-ELV-SMATV-1295 SS+5d | 104d | 0d |  |  |
| C-MEP-BMS-1265 |  | Installation of BMS Cabling & Wirring at level 24 | 16d | 2016-01-06 | 2016-01-24 | C-MEP-BMS-1255, C-MEP-BMS-1295 | 104d | 0d | 11,861.27 | GEN |
| C-MEP-BMS-1275 |  | Installation & Connection of BMS Sensors, Relays, & Valves at level 24 | 20d | 2016-01-25 | 2016-02-17 | C-MEP-BMS-1265, C-MEP-PD-1285, C-MEP-PD-1275, C-MEP-FF-1014, C-MEP-AC-2068, C-MEP-AC-2048, C-MEP-AC-2058 | 104d | 15d | 14,826.58 | GEN |
| C-MEP-BMS-1285 |  | Installtion & Connection of BMS Racks, Panels etc... at level 24 | 20d | 2016-03-07 | 2016-03-29 | C-MEP-BMS-1275, C-MEP-BMS-1535 SS | 191d | 0d | 14,826.58 |  |
|  | 5 | **MEP - Level 25** |  | 2015-10-07 | 2016-09-22 |  |  |  |  |  |
|  | 1 | **Electrical** |  | 2015-10-24 | 2016-09-22 |  |  |  |  |  |
| C-MEP-E-1566 |  | Installation of first Electrical Fix Conduits, Boxes within block work & Gypsum Boards at level 25 | 20d | 2015-10-24 | 2015-11-15 | C-F-P-783, C-MEP-E-1026 | 67d | 14d | 55,235.7 | GEN |
| C-MEP-E-1616 |  | Installation of Cable Trays & Truncking at level 25 | 18d | 2015-11-11 | 2015-12-01 | C-MEP-FF-1044 SS+10d, C-MEP-PD-1305 SS+5d, C-MEP-E-1076 | 53d | 0d | 21,017.55 |  |
| C-MEP-E-1576 |  | Installation of Electrical Second Fix (Cabling & Wirring etc..). at level 25 | 18d | 2015-12-02 | 2015-12-23 | C-MEP-E-1566, C-MEP-E-1616, C-MEP-E-1036 | 53d | 0d | 190,528.33 | GEN |
| C-MEP-E-1586 |  | Installation & Connection of Electrical DB's, SMDB's at level 25 | 16d | 2015-12-24 | 2016-01-11 | C-MEP-E-1576, C-MEP-E-1286 | 53d | 10d | 78,921.15 | GEN |
| C-MEP-E-1606 |  | Installation & Connection of Lighting Fixtures & Sockets at level 25 | 14d | 2016-09-04 | 2016-09-22 | C-MEP-E-1576, C-F-CF-1857, C-F-CF-1847, C-F-WF-1054, C-F-WF-1064, C-MEP-E-946, C-F-P-LSF-552 FF | 118d | 14d | 71,857.69 | GEN |
|  | 2 | **HVAC** |  | 2015-10-07 | 2016-08-17 |  |  |  |  |  |
| C-MEP-AC-2088 |  | Installation of Ductwork, Insulation & Dampers at level 25 | 23d | 2015-10-07 | 2015-11-02 | C-F-P-783 SS, C-MEP-AC-1208, SD-CS-L25-672 | 63d | 0d | 140,612.08 | GEN |
| C-MEP-AC-2108 |  | Installation of Chilled Water Pipes & Valves at level 25 | 25d | 2015-10-19 | 2015-11-16 | C-MEP-AC-2088 SS+10d, C-MEP-AC-1468 | 131d | 0d | 30,741.92 | GEN |
| C-MEP-AC-2128 |  | Pressure testing & Insulation of Chilled Water Pipes at level 25 | 12d | 2015-11-17 | 2015-11-30 | C-MEP-AC-2108 | 150d | 0d | 8,821.1 | GEN |
| C-MEP-AC-2118 |  | Installation of Chilled Water Pipes Control Devices & Isolator at level 25 | 8d | 2015-12-01 | 2015-12-09 | C-MEP-AC-2128 | 162d | 88d | 2,889.38 | GEN |
| C-MEP-AC-2148 |  | Installation of HVAC equipments AHU's, FCU's, ERU's, VAV's, CAV's & Fans at level 25 | 25d | 2015-12-12 | 2016-01-10 | C-MEP-AC-2138 FF, C-MEP-AC-2128 FF, C-MEP-AC-2088 SS | 116d | 15d | 53,824.01 | GEN |
| C-MEP-AC-2138 |  | Pressure testing of Ductwork at level 25 | 8d | 2016-01-02 | 2016-01-10 | C-MEP-AC-2088, C-MEP-AC-2058 | 114d | 0d |  | GEN |
| C-MEP-AC-2098 |  | Installation of Silencers, Attenuators, Isolators & Detectors at level 25 | 12d | 2016-01-11 | 2016-01-24 | C-MEP-AC-2138 | 124d | 50d | 28,274.51 | GEN |
| C-MEP-AC-2158 |  | Installation of Grilles, Diffusers & Controller at level 25 | 12d | 2016-08-04 | 2016-08-17 | C-MEP-AC-2148, C-F-CF-1857, C-F-CF-1847, C-F-WF-1064 FF, C-F-CF-1847 FF, C-F-WF-1054 FF, C-MEP-AC-1278 | 126d | 30d | 55,880.87 | GEN |
|  | 3 | **Fire Fighting** |  | 2015-10-19 | 2016-05-08 |  |  |  |  |  |
| C-MEP-FF-1044 |  | Installation of FIre fighting Pipes at level 25 | 25d | 2015-10-19 | 2015-11-16 | C-MEP-AC-2088 SS+10d, SD-CS-L25-692 | 63d | 0d | 45,406.88 | GEN |
| C-MEP-FF-1064 |  | Pressure testing of fire fighting pipes at level 25 | 8d | 2015-11-17 | 2015-11-25 | C-MEP-FF-1044 | 134d | 0d | 5,280.67 | GEN |
| C-MEP-FF-1054 |  | Installation of fire Fighting Valves at level 25 | 20d | 2015-11-26 | 2015-12-20 | C-MEP-FF-1064 | 134d | 33d | 18,427.34 | GEN |
| C-MEP-FF-1074 |  | Installation of Fire Fighting Sprinklers & Fire hose Cabinets & Extinguishers at level 25 | 14d | 2016-04-23 | 2016-05-08 | C-MEP-FF-1054, C-F-CF-1847, C-F-CF-1837, C-MEP-FF-1064 | 164d | 0d | 64,097.37 | GEN |

Notes:
- C-MEP-BMS-1255: Expenses: 1 8895.95
- C-MEP-BMS-1265: Expenses: 1 11861.3
- C-MEP-BMS-1275: Expenses: 1 14826.6
- C-MEP-BMS-1285: Expenses: 1 14826.6
- C-MEP-E-1566: Expenses: 1 55235.7
- C-MEP-E-1616: Expenses: 1 21017.5
- C-MEP-E-1576: Expenses: 1 57962.7; 2 132566
- C-MEP-E-1586: Expenses: 1 78921.1
- C-MEP-E-1606: Expenses: 1 71857.7
- C-MEP-AC-2088: Expenses: 1 140612
- C-MEP-AC-2108: Expenses: 1 30741.9
- C-MEP-AC-2128: Expenses: 1 8821.1
- C-MEP-AC-2118: Expenses: 1 2889.38
- C-MEP-AC-2148: Expenses: 1 53824
- C-MEP-AC-2098: Expenses: 1 28274.5
- C-MEP-AC-2158: Expenses: 1 55880.9
- C-MEP-FF-1044: Expenses: 1 45406.9
- C-MEP-FF-1064: Expenses: 1 5280.67
- C-MEP-FF-1054: Expenses: 1 18427.3
- C-MEP-FF-1074: Expenses: 1 64097.4

| ID | WBS | Activity | Duration | Start | Finish | Predecessors | Total float | Free float | Cost | AREA |
| --- | --- | --- | --- | --- | --- | --- | --- | --- | --- | --- |
|  | 4 | **Plumbing & Drainage** |  | 2015-11-05 | 2016-08-11 |  |  |  |  |  |
| C-MEP-PD-1305 |  | Installation of Water Pipes & Valves (Hot & Cold atc..) at level 25 | 20d | 2015-11-05 | 2015-11-28 | C-MEP-FF-1044 SS, C-F-P-793, SD-CS-L25-732 | 53d | 0d | 83,874.06 | GEN |
| C-MEP-PD-1315 |  | Installation drainage Pipes at level 25 | 25d | 2015-11-05 | 2015-12-03 | C-MEP-PD-1305 SS, C-MEP-PD-1265 SS | 112d | 0d | 30,204.4 | GEN |
| C-MEP-PD-1325 |  | Pressure testing & Insullation of water pipes at level 25 | 8d | 2015-11-29 | 2015-12-07 | C-MEP-PD-1305, C-MEP-PD-1275 SS | 140d | 6d | 9,573.63 | GEN |
| C-MEP-PD-1335 |  | Pressure testing of drainage pipes at level 25 | 8d | 2015-12-05 | 2015-12-13 | C-MEP-PD-1315 | 139d | 38d | 1,651.42 | GEN |
| C-MEP-PD-1345 |  | Installation of Outlets, Drains, Gullies, Cowls, & Clean out at level 25 | 20d | 2016-07-20 | 2016-08-11 | C-MEP-PD-1325, C-MEP-PD-1325 FF, C-F-FF-1054, C-F-WF-1054, C-F-FF-1054 FF, C-F-WF-1074, C-F-WF-1054 FF, C-F-DW-1054, C-MEP-PD-1045, C-F-P-LSF-552 FF | 149d | 23d | 13,120.28 | GEN |
|  | 7 | **ELV systems** |  | 2015-11-09 | 2016-08-06 |  |  |  |  |  |
|  | 1 | **Room Management System** |  | 2015-11-17 | 2016-05-22 |  |  |  |  |  |
| C-ELV-RMS-1345 |  | Installation of Cable Trays & Truncking at level 25 | 25d | 2015-11-17 | 2015-12-15 | C-ELV-CS-1345 SS+5d | 101d | 0d | 2,769.38 |  |
| C-ELV-RMS-1305 |  | Installation of RMS first fix (Conduits, Boxes within block work , Gypsum Boards & Raised FLooring at level 25 | 20d | 2015-11-25 | 2015-12-17 | C-F-P-793, C-F-P-783, SD-CS-L25-912, C-ELV-RMS-1255 SS | 81d | 0d | 11,902.78 | GEN |
| C-ELV-RMS-1315 |  | Installation of second fix (Cabling & Wirring etc..) at level 25 | 25d | 2015-12-20 | 2016-01-17 | C-ELV-RMS-1305, C-ELV-RMS-1345 | 105d | 0d | 11,902.78 | GEN |
| C-ELV-RMS-1325 |  | Installation & Connection of ethernets & HVAC thermostates etc.. at level 25 | 25d | 2016-01-18 | 2016-02-16 | C-ELV-RMS-1315 | 105d | 31d | 27,773.16 | GEN |
| C-ELV-RMS-1335 |  | Installtion & Connection of Panels, Controller, switches, server etc..) at level 25 | 20d | 2016-04-30 | 2016-05-22 | C-ELV-RMS-1325, C-ELV-RMS-1285 SS | 175d | 0d | 27,773.16 |  |
|  | 12 | **Fire Alarm & Detection System** |  | 2015-11-09 | 2016-05-21 |  |  |  |  |  |
| C-ELV-FA-1305 |  | Installation of FA first Fix Conduits, Boxes within block work , Gypsum Boards & Raised FLooring at level 25 | 20d | 2015-11-09 | 2015-12-01 | C-F-P-793, C-F-P-783, C-ELV-FA-1255 SS | 95d | 3d | 13,660.92 | GEN |
| C-ELV-FA-1345 |  | Installation of Cable Trays & Truncking at level 25 | 25d | 2015-11-29 | 2015-12-28 | C-ELV-MSPA-1345 SS+5d, SD-CS-L25-952 | 101d | 0d | 2,769.38 |  |
| C-ELV-FA-1315 |  | Installation of second fix (Cabling & Wirring etc..) at level 25 | 20d | 2015-12-29 | 2016-01-20 | C-ELV-FA-1305, C-ELV-FA-1345 | 102d | 0d | 22,768.2 | GEN |
| C-ELV-FA-1325 |  | Installation & Connection of heat detector, smoke detector, flame detector etc.. at level 25 | 25d | 2016-01-21 | 2016-02-20 | C-ELV-FA-1315 | 102d | 28d | 27,321.84 | GEN |
| C-ELV-FA-1335 |  | Installtion & Connection of Racks & Panels at level 25 | 20d | 2016-04-28 | 2016-05-21 | C-ELV-FA-1325, C-ELV-FA-1285 SS | 156d | 0d | 27,321.84 |  |
|  | 2 | **Music System & Public Address System** |  | 2015-11-23 | 2016-03-29 |  |  |  |  |  |
| C-ELV-MSPA-1345 |  | Installation of Cable Trays & Truncking at level 25 | 25d | 2015-11-23 | 2015-12-22 | C-ELV-RMS-1345 SS+5d | 101d | 0d | 2,769.38 |  |
| C-ELV-MSPA-1305 |  | Installation of MS/PA first fix (Conduits, Boxes within block work, Gypsum Boards & Raised FLooring at level 25 | 20d | 2015-12-14 | 2016-01-06 | C-F-P-793, C-F-P-783, SD-CS-L25-932, C-ELV-MSPA-1255 SS | 65d | 0d | 6,994.34 | GEN |
| C-ELV-MSPA-1315 |  | Installation of second fix (Cabling & Wirring etc..) at level 25 | 25d | 2016-01-07 | 2016-02-04 | C-ELV-MSPA-1305, C-ELV-MSPA-1345 | 89d | 0d | 6,994.34 | GEN |
| C-ELV-MSPA-1325 |  | Installation & Connection of speakers, Amplifier & Controller at level 25 | 25d | 2016-02-06 | 2016-03-06 | C-ELV-MSPA-1315 | 89d | 0d | 16,320.12 | GEN |
| C-ELV-MSPA-1335 |  | Installtion & Connection of Media hub, panels and processor at level 25 | 20d | 2016-03-07 | 2016-03-29 | C-ELV-MSPA-1325, C-ELV-MSPA-1285 SS | 201d | 0d | 16,320.12 |  |

Notes:
- C-MEP-PD-1305: Expenses: 1 83874.1
- C-MEP-PD-1315: Expenses: 1 30204.4
- C-MEP-PD-1325: Expenses: 1 9573.63
- C-MEP-PD-1335: Expenses: 1 1651.42
- C-MEP-PD-1345: Expenses: 1 13120.3
- C-ELV-RMS-1345: Expenses: 1 2769.38
- C-ELV-RMS-1305: Expenses: 1 11902.8
- C-ELV-RMS-1315: Expenses: 1 11902.8
- C-ELV-RMS-1325: Expenses: 1 27773.2
- C-ELV-RMS-1335: Expenses: 1 27773.2
- C-ELV-FA-1305: Expenses: 1 13660.9
- C-ELV-FA-1345: Expenses: 1 2769.38
- C-ELV-FA-1315: Expenses: 1 22768.2
- C-ELV-FA-1325: Expenses: 1 27321.8
- C-ELV-FA-1335: Expenses: 1 27321.8
- C-ELV-MSPA-1345: Expenses: 1 2769.38
- C-ELV-MSPA-1305: Expenses: 1 6994.34
- C-ELV-MSPA-1315: Expenses: 1 6994.34
- C-ELV-MSPA-1325: Expenses: 1 16320.1
- C-ELV-MSPA-1335: Expenses: 1 16320.1

| ID | WBS | Activity | Duration | Start | Finish | Predecessors | Total float | Free float | Cost | AREA |
| --- | --- | --- | --- | --- | --- | --- | --- | --- | --- | --- |
|  | 3 | **IP CCTV & Access Control System** |  | 2015-11-25 | 2016-05-07 |  |  |  |  |  |
| C-ELV-CCTV-1305 |  | Installation of CCTV first Fix Conduits, Boxes within block work, Gypsum Boards & Raised FLooring at level 25 | 20d | 2015-11-25 | 2015-12-17 | C-F-P-793, C-F-P-783, SD-CS-L25-972, C-ELV-CCTV-1255 SS | 93d | 0d | 8,161.35 | GEN |
| C-ELV-CCTV-1345 |  | Installation of Cable Trays & Truncking at level 25 | 25d | 2015-12-05 | 2016-01-03 | C-ELV-FA-1345 SS+5d | 101d | 0d | 2,769.38 |  |
| C-ELV-CCTV-1315 |  | Installation of second fix (Cabling & Wirring etc..) at level 25 | 20d | 2016-01-04 | 2016-01-26 | C-ELV-CCTV-1305, C-ELV-CCTV-1345 | 104d | 0d | 19,043.14 | GEN |
| C-ELV-CCTV-1325 |  | Installation & Connection of Camera's & Alarms at level 25 | 18d | 2016-01-27 | 2016-02-17 | C-ELV-CCTV-1315 | 104d | 30d | 183,698.91 | GEN |
| C-ELV-CCTV-1335 |  | Installtion & Connection of Racks, Panels etc... at level 25 | 25d | 2016-04-09 | 2016-05-07 | C-ELV-CCTV-1325 FF, C-ELV-CCTV-1285 SS | 123d | 0d | 7,322.52 |  |
|  | 7 | **Communication System** |  | 2015-11-11 | 2016-08-06 |  |  |  |  |  |
| C-ELV-CS-1345 |  | Installation of Cable Trays & Truncking at level 25 | 18d | 2015-11-11 | 2015-12-01 | C-MEP-E-1616 SS, C-ELV-CS-1295 SS | 97d | 0d | 2,769.38 |  |
| C-ELV-CS-1305 |  | Installation of CS first fix (Conduits, Boxes within block work, Gypsum Boards & Raised FLooring at level 25 | 20d | 2015-11-25 | 2015-12-17 | C-F-P-793, C-F-P-783, SD-CS-L25-892, C-ELV-CS-1255 SS | 81d | 0d | 27,356.12 | GEN |
| C-ELV-CS-1315 |  | Installation of second fix (Cabling & Wirring etc..) at level 25 | 25d | 2015-12-20 | 2016-01-17 | C-ELV-CS-1305, C-ELV-CS-1345 | 105d | 0d | 82,068.35 | GEN |
| C-ELV-CS-1325 |  | Installation & Connection of Wireless Access points & IP dect phone & RJ 45 at level 25 | 25d | 2016-01-18 | 2016-02-16 | C-ELV-CS-1315 | 105d | 31d | 93,342.54 | GEN |
| C-ELV-CS-1335 |  | Installtion & Connection of Controller & Instrumentation at level 25 | 20d | 2016-07-14 | 2016-08-06 | C-ELV-CS-1325, C-ELV-CS-1285 SS | 125d | 0d | 223,314.69 |  |
|  | 4 | **IP, SMATV & QAM Television System** |  | 2015-11-09 | 2016-04-14 |  |  |  |  |  |
| C-ELV-SMATV-1305 |  | Installation of SMATV first Fix Conduits, Boxes within block work , Gypsum Boards & Raised FLooring at level 25 | 20d | 2015-11-09 | 2015-12-01 | C-F-P-793, C-F-P-783, SD-CS-L25-992, C-ELV-SMATV-1255 SS | 106d | 3d | 4,452.18 | GEN |
| C-ELV-SMATV-1345 |  | Installation of Cable Trays & Truncking at level 25 | 25d | 2015-12-10 | 2016-01-09 | C-ELV-CCTV-1345 SS+5d | 101d | 0d | 2,769.38 |  |
| C-ELV-SMATV-1315 |  | Installation of second fix (Cabling & Wirring etc..) at level 25 | 16d | 2016-01-10 | 2016-01-27 | C-ELV-SMATV-1305, C-ELV-SMATV-1345 | 103d | 0d | 10,388.41 | GEN |
| C-ELV-SMATV-1325 |  | Installation & Connection of Outlets, switches and splitter at level 25 | 18d | 2016-01-28 | 2016-02-18 | C-ELV-SMATV-1315 | 103d | 28d | 6,537.45 | GEN |
| C-ELV-SMATV-1335 |  | Installtion & Connection of SMATV & QAM fiber & receiver at level 25 | 20d | 2016-03-23 | 2016-04-14 | C-ELV-SMATV-1325, C-ELV-SMATV-1285 | 167d | 0d | 2,419.21 |  |
|  | 5 | **BMS system** |  | 2015-11-05 | 2016-03-29 |  |  |  |  |  |
| C-MEP-BMS-1305 |  | Installation of BMS first Fix Conduits, Boxes within block work , Gypsum Boards & Raised FLooring at level 25 | 20d | 2015-11-05 | 2015-11-28 | C-F-P-793, C-F-P-783, SD-CS-L25-872, C-MEP-BMS-1255 SS | 92d | 0d | 8,895.95 | GEN |
| C-MEP-BMS-1345 |  | Installation of Cable trays & Trunking at level 25 | 20d | 2015-12-16 | 2016-01-09 | C-ELV-SMATV-1345 SS+5d | 101d | 0d |  |  |
| C-MEP-BMS-1315 |  | Installation of BMS Cabling & Wirring at level 25 | 16d | 2016-01-10 | 2016-01-27 | C-MEP-BMS-1305, C-MEP-BMS-1345 | 101d | 0d | 11,861.27 | GEN |
| C-MEP-BMS-1325 |  | Installation & Connection of BMS Sensors, Relays, & Valves at level 25 | 20d | 2016-01-28 | 2016-02-21 | C-MEP-BMS-1315, C-MEP-PD-1335, C-MEP-PD-1325, C-MEP-FF-1054, C-MEP-AC-2148, C-MEP-AC-2128, C-MEP-AC-2138 | 101d | 12d | 14,826.58 | GEN |
| C-MEP-BMS-1335 |  | Installtion & Connection of BMS Racks, Panels etc... at level 25 | 20d | 2016-03-07 | 2016-03-29 | C-MEP-BMS-1325, C-MEP-BMS-1285 SS | 191d | 0d | 14,826.58 |  |

Notes:
- C-ELV-CCTV-1305: Expenses: 1 8161.35
- C-ELV-CCTV-1345: Expenses: 1 2769.38
- C-ELV-CCTV-1315: Expenses: 1 19043.1
- C-ELV-CCTV-1325: Expenses: 1 183699
- C-ELV-CCTV-1335: Expenses: 1 7322.52
- C-ELV-CS-1345: Expenses: 1 2769.38
- C-ELV-CS-1305: Expenses: 1 27356.1
- C-ELV-CS-1315: Expenses: 1 82068.4
- C-ELV-CS-1325: Expenses: 1 93342.5
- C-ELV-CS-1335: Expenses: 1 223315
- C-ELV-SMATV-1305: Expenses: 1 4452.18
- C-ELV-SMATV-1345: Expenses: 1 2769.38
- C-ELV-SMATV-1315: Expenses: 1 10388.4
- C-ELV-SMATV-1325: Expenses: 1 6537.45
- C-ELV-SMATV-1335: Expenses: 1 2419.21
- C-MEP-BMS-1305: Expenses: 1 8895.95
- C-MEP-BMS-1315: Expenses: 1 11861.3
- C-MEP-BMS-1325: Expenses: 1 14826.6
- C-MEP-BMS-1335: Expenses: 1 14826.6

| ID | WBS | Activity | Duration | Start | Finish | Predecessors | Total float | Free float | Cost | AREA |
| --- | --- | --- | --- | --- | --- | --- | --- | --- | --- | --- |
|  | 4 | **MEP - Level 26** |  | 2015-10-14 | 2016-10-10 |  |  |  |  |  |
|  | 1 | **Electrical** |  | 2015-10-31 | 2016-10-10 |  |  |  |  |  |
| C-MEP-E-1686 |  | Installation of first Electrical Fix Conduits, Boxes within block work & Gypsum Boards at level 26 | 20d | 2015-10-31 | 2015-11-22 | C-F-P-843, C-MEP-E-1206 | 91d | 14d | 55,235.7 | GEN |
| C-MEP-E-1736 |  | Installation of Cable Trays & Truncking at level 26 | 18d | 2015-11-18 | 2015-12-08 | C-MEP-FF-1124 SS+10d, C-MEP-PD-1405 SS+5d, C-MEP-E-1256 | 77d | 0d | 21,017.55 |  |
| C-MEP-E-1696 |  | Installation of Electrical Second Fix (Cabling & Wirring etc..). at level 26 | 18d | 2015-12-09 | 2015-12-30 | C-MEP-E-1686, C-MEP-E-1736, C-MEP-E-1216 | 77d | 0d | 190,528.33 | GEN |
| C-MEP-E-1706 |  | Installation & Connection of Electrical DB's, SMDB's at level 26 | 16d | 2015-12-31 | 2016-01-18 | C-MEP-E-1696, C-MEP-E-1466 | 77d | 8d | 78,921.15 | GEN |
| C-MEP-E-1726 |  | Installation & Connection of Lighting Fixtures & Sockets at level 26 | 14d | 2016-09-25 | 2016-10-10 | C-MEP-E-1696, C-F-CF-1997, C-F-CF-1987, C-F-WF-1134, C-F-WF-1144, C-MEP-E-1186, C-F-P-LSF-562 FF | 114d | 1d | 71,857.69 | GEN |
|  | 2 | **HVAC** |  | 2015-10-14 | 2016-08-17 |  |  |  |  |  |
| C-MEP-AC-2248 |  | Installation of Ductwork, Insulation & Dampers at level 26 | 23d | 2015-10-14 | 2015-11-09 | C-F-P-843 SS, C-MEP-AC-1528, SD-CS-L26-692 | 78d | 0d | 140,612.08 | GEN |
| C-MEP-AC-2268 |  | Installation of Chilled Water Pipes & Valves at level 26 | 25d | 2015-10-26 | 2015-11-23 | C-MEP-AC-2248 SS+10d, C-MEP-AC-1388 | 130d | 0d | 30,741.92 | GEN |
| C-MEP-AC-2288 |  | Pressure testing & Insulation of Chilled Water Pipes at level 26 | 12d | 2015-11-24 | 2015-12-07 | C-MEP-AC-2268 | 153d | 0d | 8,821.1 | GEN |
| C-MEP-AC-2278 |  | Installation of Chilled Water Pipes Control Devices & Isolator at level 26 | 8d | 2015-12-08 | 2015-12-16 | C-MEP-AC-2288 | 165d | 82d | 2,889.38 | GEN |
| C-MEP-AC-2308 |  | Installation of HVAC equipments AHU's, FCU's, ERU's, VAV's, CAV's & Fans at level 26 | 25d | 2015-12-12 | 2016-01-10 | C-MEP-AC-2298 FF, C-MEP-AC-2288 FF, C-MEP-AC-2248 SS | 125d | 21d | 55,136.16 | GEN |
| C-MEP-AC-2298 |  | Pressure testing of Ductwork at level 26 | 8d | 2016-01-02 | 2016-01-10 | C-MEP-AC-2248, C-MEP-AC-2138 SS | 114d | 0d |  | GEN |
| C-MEP-AC-2258 |  | Installation of Silencers, Attenuators, Isolators & Detectors at level 26 | 12d | 2016-01-11 | 2016-01-24 | C-MEP-AC-2298 | 133d | 50d | 28,274.51 | GEN |
| C-MEP-AC-2318 |  | Installation of Grilles, Diffusers & Controller at level 26 | 12d | 2016-08-04 | 2016-08-17 | C-MEP-AC-2308, C-F-CF-1997, C-F-CF-1987, C-F-WF-1144 FF, C-F-CF-1987 FF, C-F-WF-1134 FF, C-MEP-AC-1598 | 126d | 31d | 55,880.87 | GEN |
|  | 3 | **Fire Fighting** |  | 2015-10-26 | 2016-05-08 |  |  |  |  |  |
| C-MEP-FF-1124 |  | Installation of FIre fighting Pipes at level 26 | 25d | 2015-10-26 | 2015-11-23 | C-MEP-AC-2248 SS+10d, SD-CS-L26-712 | 87d | 0d | 45,406.88 | GEN |
| C-MEP-FF-1144 |  | Pressure testing of fire fighting pipes at level 26 | 8d | 2015-11-24 | 2015-12-02 | C-MEP-FF-1124 | 137d | 0d | 5,280.67 | GEN |
| C-MEP-FF-1134 |  | Installation of fire Fighting Valves at level 26 | 20d | 2015-12-03 | 2015-12-27 | C-MEP-FF-1144 | 137d | 33d | 18,427.34 | GEN |
| C-MEP-FF-1154 |  | Installation of Fire Fighting Sprinklers & Fire hose Cabinets & Extinguishers at level 26 | 14d | 2016-04-23 | 2016-05-08 | C-MEP-FF-1134, C-F-CF-1987, C-F-CF-1977, C-MEP-FF-1144 | 164d | 0d | 64,097.37 | GEN |
|  | 4 | **Plumbing & Drainage** |  | 2015-11-12 | 2016-08-17 |  |  |  |  |  |
| C-MEP-PD-1405 |  | Installation of Water Pipes & Valves (Hot & Cold atc..) at level 26 | 20d | 2015-11-12 | 2015-12-05 | C-MEP-FF-1124 SS, C-F-P-853, SD-CS-L26-752 | 77d | 0d | 83,874.06 | GEN |
| C-MEP-PD-1415 |  | Installation drainage Pipes at level 26 | 25d | 2015-12-05 | 2016-01-03 | C-MEP-PD-1405 SS, C-MEP-PD-1315 | 112d | 0d | 30,204.4 | GEN |
| C-MEP-PD-1425 |  | Pressure testing & Insullation of water pipes at level 26 | 8d | 2015-12-06 | 2015-12-14 | C-MEP-PD-1405, C-MEP-PD-1325 SS | 134d | 6d | 9,573.63 | GEN |
| C-MEP-PD-1435 |  | Pressure testing of drainage pipes at level 26 | 8d | 2016-01-04 | 2016-01-12 | C-MEP-PD-1415 | 123d | 19d | 1,651.42 | GEN |
| C-MEP-PD-1445 |  | Installation of Outlets, Drains, Gullies, Cowls, & Clean out at level 26 | 20d | 2016-07-26 | 2016-08-17 | C-MEP-PD-1425, C-MEP-PD-1425 FF, C-F-FF-1134, C-F-WF-1134, C-F-FF-1134 FF, C-F-WF-1154, C-F-WF-1134 FF, C-F-DW-1134, C-MEP-PD-795, C-F-P-LSF-562 FF | 154d | 39d | 13,120.28 | GEN |

Notes:
- C-MEP-E-1686: Expenses: 1 55235.7
- C-MEP-E-1736: Expenses: 1 21017.5
- C-MEP-E-1696: Expenses: 1 57962.7; 2 132566
- C-MEP-E-1706: Expenses: 1 78921.1
- C-MEP-E-1726: Expenses: 1 71857.7
- C-MEP-AC-2248: Expenses: 1 140612
- C-MEP-AC-2268: Expenses: 1 30741.9
- C-MEP-AC-2288: Expenses: 1 8821.1
- C-MEP-AC-2278: Expenses: 1 2889.38
- C-MEP-AC-2308: Expenses: 1 55136.2
- C-MEP-AC-2258: Expenses: 1 28274.5
- C-MEP-AC-2318: Expenses: 1 55880.9
- C-MEP-FF-1124: Expenses: 1 45406.9
- C-MEP-FF-1144: Expenses: 1 5280.67
- C-MEP-FF-1134: Expenses: 1 18427.3
- C-MEP-FF-1154: Expenses: 1 64097.4
- C-MEP-PD-1405: Expenses: 1 83874.1
- C-MEP-PD-1415: Expenses: 1 30204.4
- C-MEP-PD-1425: Expenses: 1 9573.63
- C-MEP-PD-1435: Expenses: 1 1651.42
- C-MEP-PD-1445: Expenses: 1 13120.3

| ID | WBS | Activity | Duration | Start | Finish | Predecessors | Total float | Free float | Cost | AREA |
| --- | --- | --- | --- | --- | --- | --- | --- | --- | --- | --- |
|  | 7 | **ELV systems** |  | 2015-11-12 | 2016-08-06 |  |  |  |  |  |
|  | 1 | **Room Management System** |  | 2015-11-24 | 2016-05-22 |  |  |  |  |  |
| C-ELV-RMS-1445 |  | Installation of Cable Trays & Truncking at level 26 | 25d | 2015-11-24 | 2015-12-23 | C-ELV-CS-1445 SS+5d | 104d | 0d | 2,769.38 |  |
| C-ELV-RMS-1405 |  | Installation of RMS first fix (Conduits, Boxes within block work , Gypsum Boards & Raised FLooring at level 26 | 20d | 2015-11-25 | 2015-12-17 | C-F-P-853, C-F-P-843, SD-CS-L26-932, C-ELV-RMS-1305 SS | 81d | 0d | 11,902.78 | GEN |
| C-ELV-RMS-1415 |  | Installation of second fix (Cabling & Wirring etc..) at level 26 | 25d | 2015-12-24 | 2016-01-21 | C-ELV-RMS-1405, C-ELV-RMS-1445 | 110d | 0d | 11,902.78 | GEN |
| C-ELV-RMS-1425 |  | Installation & Connection of ethernets & HVAC thermostates etc.. at level 26 | 25d | 2016-01-23 | 2016-02-21 | C-ELV-RMS-1415 | 110d | 27d | 27,773.16 | GEN |
| C-ELV-RMS-1435 |  | Installtion & Connection of Panels, Controller, switches, server etc..) at level 26 | 20d | 2016-04-30 | 2016-05-22 | C-ELV-RMS-1425, C-ELV-RMS-1335 SS | 175d | 0d | 27,773.16 |  |
|  | 12 | **Fire Alarm & Detection System** |  | 2015-11-12 | 2016-05-21 |  |  |  |  |  |
| C-ELV-FA-1405 |  | Installation of FA first Fix Conduits, Boxes within block work , Gypsum Boards & Raised FLooring at level 26 | 20d | 2015-11-12 | 2015-12-05 | C-F-P-853, C-F-P-843, C-ELV-FA-1305 SS | 92d | 6d | 13,660.92 | GEN |
| C-ELV-FA-1445 |  | Installation of Cable Trays & Truncking at level 26 | 25d | 2015-12-06 | 2016-01-04 | C-ELV-MSPA-1445 SS+5d, SD-CS-L26-972 | 104d | 0d | 2,769.38 |  |
| C-ELV-FA-1415 |  | Installation of second fix (Cabling & Wirring etc..) at level 26 | 20d | 2016-01-05 | 2016-01-27 | C-ELV-FA-1405, C-ELV-FA-1445 | 105d | 0d | 22,768.2 | GEN |
| C-ELV-FA-1425 |  | Installation & Connection of heat detector, smoke detector, flame detector etc.. at level 26 | 25d | 2016-01-28 | 2016-02-27 | C-ELV-FA-1415 | 105d | 22d | 27,321.84 | GEN |
| C-ELV-FA-1435 |  | Installtion & Connection of Racks & Panels at level 26 | 20d | 2016-04-28 | 2016-05-21 | C-ELV-FA-1425, C-ELV-FA-1335 SS | 156d | 0d | 27,321.84 |  |
|  | 2 | **Music System & Public Address System** |  | 2015-11-30 | 2016-03-29 |  |  |  |  |  |
| C-ELV-MSPA-1445 |  | Installation of Cable Trays & Truncking at level 26 | 25d | 2015-11-30 | 2015-12-29 | C-ELV-RMS-1445 SS+5d | 104d | 0d | 2,769.38 |  |
| C-ELV-MSPA-1405 |  | Installation of MS/PA first fix (Conduits, Boxes within block work, Gypsum Boards & Raised FLooring at level 26 | 20d | 2015-12-14 | 2016-01-06 | C-F-P-853, C-F-P-843, SD-CS-L26-952, C-ELV-MSPA-1305 SS | 65d | 0d | 6,994.34 | GEN |
| C-ELV-MSPA-1415 |  | Installation of second fix (Cabling & Wirring etc..) at level 26 | 25d | 2016-01-07 | 2016-02-04 | C-ELV-MSPA-1405, C-ELV-MSPA-1445 | 98d | 0d | 6,994.34 | GEN |
| C-ELV-MSPA-1425 |  | Installation & Connection of speakers, Amplifier & Controller at level 26 | 25d | 2016-02-06 | 2016-03-06 | C-ELV-MSPA-1415 | 98d | 0d | 16,320.12 | GEN |
| C-ELV-MSPA-1435 |  | Installtion & Connection of Media hub, panels and processor at level 26 | 20d | 2016-03-07 | 2016-03-29 | C-ELV-MSPA-1425, C-ELV-MSPA-1335 SS | 201d | 0d | 16,320.12 |  |
|  | 3 | **IP CCTV & Access Control System** |  | 2015-11-25 | 2016-05-07 |  |  |  |  |  |
| C-ELV-CCTV-1405 |  | Installation of CCTV first Fix Conduits, Boxes within block work, Gypsum Boards & Raised FLooring at level 26 | 20d | 2015-11-25 | 2015-12-17 | C-F-P-853, C-F-P-843, SD-CS-L26-992, C-ELV-CCTV-1305 SS | 93d | 0d | 8,161.35 | GEN |
| C-ELV-CCTV-1445 |  | Installation of Cable Trays & Truncking at level 26 | 25d | 2015-12-12 | 2016-01-10 | C-ELV-FA-1445 SS+5d | 104d | 0d | 2,769.38 |  |
| C-ELV-CCTV-1415 |  | Installation of second fix (Cabling & Wirring etc..) at level 26 | 20d | 2016-01-11 | 2016-02-02 | C-ELV-CCTV-1405, C-ELV-CCTV-1445 | 107d | 0d | 19,043.14 | GEN |
| C-ELV-CCTV-1425 |  | Installation & Connection of Camera's & Alarms at level 26 | 18d | 2016-02-03 | 2016-02-24 | C-ELV-CCTV-1415 | 107d | 24d | 183,698.91 | GEN |
| C-ELV-CCTV-1435 |  | Installtion & Connection of Racks, Panels etc... at level 26 | 25d | 2016-04-09 | 2016-05-07 | C-ELV-CCTV-1425 FF, C-ELV-CCTV-1335 SS | 123d | 0d | 7,322.52 |  |

Notes:
- C-ELV-RMS-1445: Expenses: 1 2769.38
- C-ELV-RMS-1405: Expenses: 1 11902.8
- C-ELV-RMS-1415: Expenses: 1 11902.8
- C-ELV-RMS-1425: Expenses: 1 27773.2
- C-ELV-RMS-1435: Expenses: 1 27773.2
- C-ELV-FA-1405: Expenses: 1 13660.9
- C-ELV-FA-1445: Expenses: 1 2769.38
- C-ELV-FA-1415: Expenses: 1 22768.2
- C-ELV-FA-1425: Expenses: 1 27321.8
- C-ELV-FA-1435: Expenses: 1 27321.8
- C-ELV-MSPA-1445: Expenses: 1 2769.38
- C-ELV-MSPA-1405: Expenses: 1 6994.34
- C-ELV-MSPA-1415: Expenses: 1 6994.34
- C-ELV-MSPA-1425: Expenses: 1 16320.1
- C-ELV-MSPA-1435: Expenses: 1 16320.1
- C-ELV-CCTV-1405: Expenses: 1 8161.35
- C-ELV-CCTV-1445: Expenses: 1 2769.38
- C-ELV-CCTV-1415: Expenses: 1 19043.1
- C-ELV-CCTV-1425: Expenses: 1 183699
- C-ELV-CCTV-1435: Expenses: 1 7322.52

| ID | WBS | Activity | Duration | Start | Finish | Predecessors | Total float | Free float | Cost | AREA |
| --- | --- | --- | --- | --- | --- | --- | --- | --- | --- | --- |
|  | 7 | **Communication System** |  | 2015-11-18 | 2016-08-06 |  |  |  |  |  |
| C-ELV-CS-1445 |  | Installation of Cable Trays & Truncking at level 26 | 18d | 2015-11-18 | 2015-12-08 | C-MEP-E-1736 SS, C-ELV-CS-1345 SS | 91d | 0d | 2,769.38 |  |
| C-ELV-CS-1405 |  | Installation of CS first fix (Conduits, Boxes within block work, Gypsum Boards & Raised FLooring at level 26 | 20d | 2015-11-25 | 2015-12-17 | C-F-P-853, C-F-P-843, SD-CS-L26-912, C-ELV-CS-1305 SS | 81d | 0d | 27,356.12 | GEN |
| C-ELV-CS-1415 |  | Installation of second fix (Cabling & Wirring etc..) at level 26 | 25d | 2015-12-20 | 2016-01-17 | C-ELV-CS-1405, C-ELV-CS-1445 | 114d | 0d | 82,068.35 | GEN |
| C-ELV-CS-1425 |  | Installation & Connection of Wireless Access points & IP dect phone & RJ 45 at level 26 | 25d | 2016-01-18 | 2016-02-16 | C-ELV-CS-1415 | 114d | 31d | 93,342.54 | GEN |
| C-ELV-CS-1435 |  | Installtion & Connection of Controller & Instrumentation at level 26 | 20d | 2016-07-14 | 2016-08-06 | C-ELV-CS-1425, C-ELV-CS-1335 SS | 125d | 0d | 223,314.69 |  |
|  | 4 | **IP, SMATV & QAM Television System** |  | 2015-11-12 | 2016-04-14 |  |  |  |  |  |
| C-ELV-SMATV-1405 |  | Installation of SMATV first Fix Conduits, Boxes within block work , Gypsum Boards & Raised FLooring at level 26 | 20d | 2015-11-12 | 2015-12-05 | C-F-P-853, C-F-P-843, SD-CS-L26-1012, C-ELV-SMATV-1305 SS | 103d | 6d | 4,452.18 | GEN |
| C-ELV-SMATV-1445 |  | Installation of Cable Trays & Truncking at level 26 | 25d | 2015-12-17 | 2016-01-16 | C-ELV-CCTV-1445 SS+5d | 104d | 0d | 2,769.38 |  |
| C-ELV-SMATV-1415 |  | Installation of second fix (Cabling & Wirring etc..) at level 26 | 16d | 2016-01-17 | 2016-02-03 | C-ELV-SMATV-1405, C-ELV-SMATV-1445 | 106d | 0d | 10,388.41 | GEN |
| C-ELV-SMATV-1425 |  | Installation & Connection of Outlets, switches and splitter at level 26 | 18d | 2016-02-04 | 2016-02-25 | C-ELV-SMATV-1415 | 106d | 22d | 6,537.45 | GEN |
| C-ELV-SMATV-1435 |  | Installtion & Connection of SMATV & QAM fiber & receiver at level 26 | 20d | 2016-03-23 | 2016-04-14 | C-ELV-SMATV-1425, C-ELV-SMATV-1335 SS | 167d | 0d | 2,419.21 |  |
|  | 5 | **BMS system** |  | 2015-11-29 | 2016-04-21 |  |  |  |  |  |
| C-MEP-BMS-1405 |  | Installation of BMS first Fix Conduits, Boxes within block work , Gypsum Boards & Raised FLooring at level 26 | 20d | 2015-11-29 | 2015-12-22 | C-F-P-853, C-F-P-843, SD-CS-L26-892, C-MEP-BMS-1305 | 92d | 0d | 8,895.95 | GEN |
| C-MEP-BMS-1445 |  | Installation of Cable trays & Trunking at level 26 | 20d | 2015-12-24 | 2016-01-16 | C-ELV-SMATV-1445 SS+5d | 104d | 0d |  |  |
| C-MEP-BMS-1415 |  | Installation of BMS Cabling & Wirring at level 26 | 16d | 2016-01-17 | 2016-02-03 | C-MEP-BMS-1405, C-MEP-BMS-1445 | 104d | 0d | 11,861.27 | GEN |
| C-MEP-BMS-1425 |  | Installation & Connection of BMS Sensors, Relays, & Valves at level 26 | 20d | 2016-02-04 | 2016-02-28 | C-MEP-BMS-1415, C-MEP-PD-1435, C-MEP-PD-1425, C-MEP-FF-1134, C-MEP-AC-2308, C-MEP-AC-2288, C-MEP-AC-2298 | 104d | 21d | 14,826.58 | GEN |
| C-MEP-BMS-1435 |  | Installtion & Connection of BMS Racks, Panels etc... at level 26 | 20d | 2016-03-30 | 2016-04-21 | C-MEP-BMS-1425, C-MEP-BMS-1335 | 191d | 0d | 14,826.58 |  |
|  | 3 | **MEP - Level 27** |  | 2015-10-21 | 2016-10-26 |  |  |  |  |  |
|  | 1 | **Electrical** |  | 2015-11-07 | 2016-10-26 |  |  |  |  |  |
| C-MEP-E-1386 |  | Installation of first Electrical Fix Conduits, Boxes within block work & Gypsum Boards at level 27 | 20d | 2015-11-07 | 2015-11-29 | C-F-P-693, C-MEP-E-906 | 91d | 14d | 55,235.7 | GEN |
| C-MEP-E-1436 |  | Installation of Cable Trays & Truncking at level 27 | 18d | 2015-11-25 | 2015-12-15 | C-MEP-FF-924 SS+10d, C-MEP-PD-1155 SS+5d, C-MEP-E-956 | 82d | 0d | 21,017.55 |  |
| C-MEP-E-1396 |  | Installation of Electrical Second Fix (Cabling & Wirring etc..). at level 27 | 18d | 2015-12-16 | 2016-01-06 | C-MEP-E-1386, C-MEP-E-1436, C-MEP-E-916 | 83d | 0d | 190,528.33 | GEN |
| C-MEP-E-1406 |  | Installation & Connection of Electrical DB's, SMDB's at level 27 | 16d | 2016-01-07 | 2016-01-25 | C-MEP-E-1396, C-MEP-E-1826 SS | 103d | 32d | 78,921.15 | GEN |
| C-MEP-E-1426 |  | Installation & Connection of Lighting Fixtures & Sockets at level 27 | 14d | 2016-10-11 | 2016-10-26 | C-MEP-E-1396, C-F-CF-1647, C-F-CF-1637, C-F-WF-934, C-F-WF-944, C-MEP-E-1306, C-F-P-LSF-572 FF | 100d | 8d | 71,857.69 | GEN |

Notes:
- C-ELV-CS-1445: Expenses: 1 2769.38
- C-ELV-CS-1405: Expenses: 1 27356.1
- C-ELV-CS-1415: Expenses: 1 82068.4
- C-ELV-CS-1425: Expenses: 1 93342.5
- C-ELV-CS-1435: Expenses: 1 223315
- C-ELV-SMATV-1405: Expenses: 1 4452.18
- C-ELV-SMATV-1445: Expenses: 1 2769.38
- C-ELV-SMATV-1415: Expenses: 1 10388.4
- C-ELV-SMATV-1425: Expenses: 1 6537.45
- C-ELV-SMATV-1435: Expenses: 1 2419.21
- C-MEP-BMS-1405: Expenses: 1 8895.95
- C-MEP-BMS-1415: Expenses: 1 11861.3
- C-MEP-BMS-1425: Expenses: 1 14826.6
- C-MEP-BMS-1435: Expenses: 1 14826.6
- C-MEP-E-1386: Expenses: 1 55235.7
- C-MEP-E-1436: Expenses: 1 21017.5
- C-MEP-E-1396: Expenses: 1 57962.7; 2 132566
- C-MEP-E-1406: Expenses: 1 78921.1
- C-MEP-E-1426: Expenses: 1 71857.7

| ID | WBS | Activity | Duration | Start | Finish | Predecessors | Total float | Free float | Cost | AREA |
| --- | --- | --- | --- | --- | --- | --- | --- | --- | --- | --- |
|  | 2 | **HVAC** |  | 2015-10-21 | 2016-08-17 |  |  |  |  |  |
| C-MEP-AC-1848 |  | Installation of Ductwork, Insulation & Dampers at level 27 | 23d | 2015-10-21 | 2015-11-16 | C-F-P-693 SS, C-MEP-AC-1688 SS, SD-CS-L27-712 | 83d | 0d | 140,612.08 | GEN |
| C-MEP-AC-1868 |  | Installation of Chilled Water Pipes & Valves at level 27 | 25d | 2015-11-02 | 2015-11-30 | C-MEP-AC-1848 SS+10d, C-MEP-AC-1628 | 124d | 0d | 30,741.92 | GEN |
| C-MEP-AC-1888 |  | Pressure testing & Insulation of Chilled Water Pipes at level 27 | 12d | 2015-12-01 | 2015-12-14 | C-MEP-AC-1868 | 155d | 0d | 8,821.1 | GEN |
| C-MEP-AC-1908 |  | Installation of HVAC equipments AHU's, FCU's, ERU's, VAV's, CAV's & Fans at level 27 | 25d | 2015-12-12 | 2016-01-10 | C-MEP-AC-1898 FF, C-MEP-AC-1888 FF, C-MEP-AC-1848 SS | 133d | 27d | 62,024.97 | GEN |
| C-MEP-AC-1878 |  | Installation of Chilled Water Pipes Control Devices & Isolator at level 27 | 8d | 2015-12-15 | 2015-12-24 | C-MEP-AC-1888 | 167d | 76d | 2,889.38 | GEN |
| C-MEP-AC-1898 |  | Pressure testing of Ductwork at level 27 | 8d | 2016-01-02 | 2016-01-10 | C-MEP-AC-1848, C-MEP-AC-2298 SS | 114d | 0d |  | GEN |
| C-MEP-AC-1858 |  | Installation of Silencers, Attenuators, Isolators & Detectors at level 27 | 12d | 2016-01-11 | 2016-01-24 | C-MEP-AC-1898 | 141d | 50d | 28,274.51 | GEN |
| C-MEP-AC-1918 |  | Installation of Grilles, Diffusers & Controller at level 27 | 12d | 2016-08-04 | 2016-08-17 | C-MEP-AC-1908, C-F-CF-1647, C-F-CF-1637, C-F-WF-944 FF, C-F-CF-1637 FF, C-F-WF-934 FF, C-MEP-AC-1758 | 126d | 52d | 55,880.87 | GEN |
|  | 3 | **Fire Fighting** |  | 2015-11-02 | 2016-05-08 |  |  |  |  |  |
| C-MEP-FF-924 |  | Installation of FIre fighting Pipes at level 27 | 25d | 2015-11-02 | 2015-11-30 | C-MEP-AC-1848 SS+10d, SD-CS-L27-732 | 92d | 0d | 45,406.88 | GEN |
| C-MEP-FF-944 |  | Pressure testing of fire fighting pipes at level 27 | 8d | 2015-12-01 | 2015-12-09 | C-MEP-FF-924 | 139d | 0d | 5,280.67 | GEN |
| C-MEP-FF-934 |  | Installation of fire Fighting Valves at level 27 | 20d | 2015-12-10 | 2016-01-03 | C-MEP-FF-944 | 139d | 33d | 18,427.34 | GEN |
| C-MEP-FF-954 |  | Installation of Fire Fighting Sprinklers & Fire hose Cabinets & Extinguishers at level 27 | 14d | 2016-04-23 | 2016-05-08 | C-MEP-FF-934, C-F-CF-1637, C-F-CF-1627, C-MEP-FF-944 | 164d | 0d | 64,097.37 | GEN |
|  | 4 | **Plumbing & Drainage** |  | 2015-11-19 | 2016-08-23 |  |  |  |  |  |
| C-MEP-PD-1155 |  | Installation of Water Pipes & Valves (Hot & Cold atc..) at level 27 | 20d | 2015-11-19 | 2015-12-12 | C-MEP-FF-924 SS, C-F-P-703, SD-CS-L27-772 | 82d | 0d | 83,874.06 | GEN |
| C-MEP-PD-1165 |  | Installation drainage Pipes at level 27 | 25d | 2015-12-05 | 2016-01-03 | C-MEP-PD-1155 SS, C-MEP-PD-1415 SS | 112d | 0d | 30,204.4 | GEN |
| C-MEP-PD-1175 |  | Pressure testing & Insullation of water pipes at level 27 | 8d | 2015-12-13 | 2015-12-22 | C-MEP-PD-1155, C-MEP-PD-1425 SS | 128d | 14d | 9,573.63 | GEN |
| C-MEP-PD-1185 |  | Pressure testing of drainage pipes at level 27 | 8d | 2016-01-04 | 2016-01-12 | C-MEP-PD-1165 | 131d | 25d | 1,651.42 | GEN |
| C-MEP-PD-1195 |  | Installation of Outlets, Drains, Gullies, Cowls, & Clean out at level 27 | 20d | 2016-08-01 | 2016-08-23 | C-MEP-PD-1175, C-MEP-PD-1175 FF, C-F-FF-934, C-F-WF-934, C-F-FF-934 FF, C-F-WF-954, C-F-WF-934 FF, C-F-DW-934, C-MEP-PD-995, C-F-P-LSF-572 FF | 149d | 25d | 13,120.28 | GEN |
|  | 7 | **ELV systems** |  | 2015-11-19 | 2016-08-06 |  |  |  |  |  |
|  | 1 | **Room Management System** |  | 2015-11-25 | 2016-05-22 |  |  |  |  |  |
| C-ELV-RMS-1155 |  | Installation of RMS first fix (Conduits, Boxes within block work , Gypsum Boards & Raised FLooring at level 27 | 20d | 2015-11-25 | 2015-12-17 | C-F-P-703, C-F-P-693, SD-CS-L27-952, C-ELV-RMS-1405 SS | 81d | 3d | 11,902.78 | GEN |
| C-ELV-RMS-1195 |  | Installation of Cable Trays & Truncking at level 27 | 18d | 2015-12-01 | 2015-12-22 | C-ELV-CS-1195 SS+5d | 106d | 0d | 2,769.38 |  |
| C-ELV-RMS-1165 |  | Installation of second fix (Cabling & Wirring etc..) at level 27 | 25d | 2015-12-23 | 2016-01-20 | C-ELV-RMS-1155, C-ELV-RMS-1195 | 119d | 0d | 11,902.78 | GEN |
| C-ELV-RMS-1175 |  | Installation & Connection of ethernets & HVAC thermostates etc.. at level 27 | 25d | 2016-01-21 | 2016-02-20 | C-ELV-RMS-1165 | 119d | 28d | 27,773.16 | GEN |
| C-ELV-RMS-1185 |  | Installtion & Connection of Panels, Controller, switches, server etc..) at level 27 | 20d | 2016-04-30 | 2016-05-22 | C-ELV-RMS-1175, C-ELV-RMS-1435 SS | 175d | 0d | 27,773.16 |  |

Notes:
- C-MEP-AC-1848: Expenses: 1 140612
- C-MEP-AC-1868: Expenses: 1 30741.9
- C-MEP-AC-1888: Expenses: 1 8821.1
- C-MEP-AC-1908: Expenses: 1 62025
- C-MEP-AC-1878: Expenses: 1 2889.38
- C-MEP-AC-1858: Expenses: 1 28274.5
- C-MEP-AC-1918: Expenses: 1 55880.9
- C-MEP-FF-924: Expenses: 1 45406.9
- C-MEP-FF-944: Expenses: 1 5280.67
- C-MEP-FF-934: Expenses: 1 18427.3
- C-MEP-FF-954: Expenses: 1 64097.4
- C-MEP-PD-1155: Expenses: 1 83874.1
- C-MEP-PD-1165: Expenses: 1 30204.4
- C-MEP-PD-1175: Expenses: 1 9573.63
- C-MEP-PD-1185: Expenses: 1 1651.42
- C-MEP-PD-1195: Expenses: 1 13120.3
- C-ELV-RMS-1155: Expenses: 1 11902.8
- C-ELV-RMS-1195: Expenses: 1 2769.38
- C-ELV-RMS-1165: Expenses: 1 11902.8
- C-ELV-RMS-1175: Expenses: 1 27773.2
- C-ELV-RMS-1185: Expenses: 1 27773.2

| ID | WBS | Activity | Duration | Start | Finish | Predecessors | Total float | Free float | Cost | AREA |
| --- | --- | --- | --- | --- | --- | --- | --- | --- | --- | --- |
|  | 12 | **Fire Alarm & Detection System** |  | 2015-11-19 | 2016-05-21 |  |  |  |  |  |
| C-ELV-FA-1155 |  | Installation of FA first Fix Conduits, Boxes within block work , Gypsum Boards & Raised FLooring at level 27 | 20d | 2015-11-19 | 2015-12-12 | C-F-P-703, C-F-P-693, C-ELV-FA-1405 SS | 86d | 14d | 13,660.92 | GEN |
| C-ELV-FA-1195 |  | Installation of Cable Trays & Truncking at level 27 | 18d | 2015-12-13 | 2016-01-03 | C-ELV-MSPA-1195 SS+5d, SD-CS-L27-992 | 106d | 0d | 2,769.38 |  |
| C-ELV-FA-1165 |  | Installation of second fix (Cabling & Wirring etc..) at level 27 | 20d | 2016-01-04 | 2016-01-26 | C-ELV-FA-1155, C-ELV-FA-1195 | 114d | 0d | 22,768.2 | GEN |
| C-ELV-FA-1175 |  | Installation & Connection of heat detector, smoke detector, flame detector etc.. at level 27 | 25d | 2016-01-27 | 2016-02-25 | C-ELV-FA-1165 | 114d | 23d | 27,321.84 | GEN |
| C-ELV-FA-1185 |  | Installtion & Connection of Racks & Panels at level 27 | 20d | 2016-04-28 | 2016-05-21 | C-ELV-FA-1175, C-ELV-FA-1435 SS | 156d | 0d | 27,321.84 |  |
|  | 2 | **Music System & Public Address System** |  | 2015-12-07 | 2016-03-29 |  |  |  |  |  |
| C-ELV-MSPA-1195 |  | Installation of Cable Trays & Truncking at level 27 | 18d | 2015-12-07 | 2015-12-28 | C-ELV-RMS-1195 SS+5d | 106d | 0d | 2,769.38 |  |
| C-ELV-MSPA-1155 |  | Installation of MS/PA first fix (Conduits, Boxes within block work, Gypsum Boards & Raised FLooring at level 27 | 20d | 2015-12-14 | 2016-01-06 | C-F-P-703, C-F-P-693, SD-CS-L27-972, C-ELV-MSPA-1405 SS | 65d | 0d | 6,994.34 | GEN |
| C-ELV-MSPA-1165 |  | Installation of second fix (Cabling & Wirring etc..) at level 27 | 25d | 2016-01-07 | 2016-02-04 | C-ELV-MSPA-1155, C-ELV-MSPA-1195 | 106d | 0d | 6,994.34 | GEN |
| C-ELV-MSPA-1175 |  | Installation & Connection of speakers, Amplifier & Controller at level 27 | 25d | 2016-02-06 | 2016-03-06 | C-ELV-MSPA-1165 | 106d | 0d | 16,320.12 | GEN |
| C-ELV-MSPA-1185 |  | Installtion & Connection of Media hub, panels and processor at level 27 | 20d | 2016-03-07 | 2016-03-29 | C-ELV-MSPA-1175, C-ELV-MSPA-1435 SS | 201d | 20d | 16,320.12 |  |
|  | 3 | **IP CCTV & Access Control System** |  | 2015-11-25 | 2016-06-05 |  |  |  |  |  |
| C-ELV-CCTV-1155 |  | Installation of CCTV first Fix Conduits, Boxes within block work, Gypsum Boards & Raised FLooring at level 27 | 20d | 2015-11-25 | 2015-12-17 | C-F-P-703, C-F-P-693, SD-CS-L27-1012, C-ELV-CCTV-1405 SS | 93d | 9d | 8,161.35 | GEN |
| C-ELV-CCTV-1195 |  | Installation of Cable Trays & Truncking at level 27 | 18d | 2015-12-20 | 2016-01-09 | C-ELV-FA-1195 SS+5d | 106d | 0d | 2,769.38 |  |
| C-ELV-CCTV-1165 |  | Installation of second fix (Cabling & Wirring etc..) at level 27 | 20d | 2016-01-10 | 2016-02-01 | C-ELV-CCTV-1155, C-ELV-CCTV-1195 | 116d | 0d | 19,043.14 | GEN |
| C-ELV-CCTV-1175 |  | Installation & Connection of Camera's & Alarms at level 27 | 18d | 2016-02-02 | 2016-02-23 | C-ELV-CCTV-1165 | 116d | 25d | 183,698.91 | GEN |
| C-ELV-CCTV-1185 |  | Installtion & Connection of Racks, Panels etc... at level 27 | 25d | 2016-05-08 | 2016-06-05 | C-ELV-CCTV-1175 FF, C-ELV-CCTV-1435 | 123d | 0d | 7,322.52 |  |
|  | 7 | **Communication System** |  | 2015-11-25 | 2016-08-06 |  |  |  |  |  |
| C-ELV-CS-1155 |  | Installation of CS first fix (Conduits, Boxes within block work, Gypsum Boards & Raised FLooring at level 27 | 20d | 2015-11-25 | 2015-12-17 | C-F-P-703, C-F-P-693, SD-CS-L27-932, C-ELV-CS-1405 SS | 81d | 0d | 27,356.12 | GEN |
| C-ELV-CS-1195 |  | Installation of Cable Trays & Truncking at level 27 | 18d | 2015-11-25 | 2015-12-15 | C-MEP-E-1436 SS, C-ELV-CS-1445 SS | 85d | 0d | 2,769.38 |  |
| C-ELV-CS-1165 |  | Installation of second fix (Cabling & Wirring etc..) at level 27 | 25d | 2015-12-20 | 2016-01-17 | C-ELV-CS-1155, C-ELV-CS-1195 | 122d | 0d | 82,068.35 | GEN |
| C-ELV-CS-1175 |  | Installation & Connection of Wireless Access points & IP dect phone & RJ 45 at level 27 | 25d | 2016-01-18 | 2016-02-16 | C-ELV-CS-1165 | 122d | 31d | 93,342.54 | GEN |
| C-ELV-CS-1185 |  | Installtion & Connection of Controller & Instrumentation at level 27 | 20d | 2016-07-14 | 2016-08-06 | C-ELV-CS-1175, C-ELV-CS-1435 SS | 137d | 0d | 223,314.69 |  |

Notes:
- C-ELV-FA-1155: Expenses: 1 13660.9
- C-ELV-FA-1195: Expenses: 1 2769.38
- C-ELV-FA-1165: Expenses: 1 22768.2
- C-ELV-FA-1175: Expenses: 1 27321.8
- C-ELV-FA-1185: Expenses: 1 27321.8
- C-ELV-MSPA-1195: Expenses: 1 2769.38
- C-ELV-MSPA-1155: Expenses: 1 6994.34
- C-ELV-MSPA-1165: Expenses: 1 6994.34
- C-ELV-MSPA-1175: Expenses: 1 16320.1
- C-ELV-MSPA-1185: Expenses: 1 16320.1
- C-ELV-CCTV-1155: Expenses: 1 8161.35
- C-ELV-CCTV-1195: Expenses: 1 2769.38
- C-ELV-CCTV-1165: Expenses: 1 19043.1
- C-ELV-CCTV-1175: Expenses: 1 183699
- C-ELV-CCTV-1185: Expenses: 1 7322.52
- C-ELV-CS-1155: Expenses: 1 27356.1
- C-ELV-CS-1195: Expenses: 1 2769.38
- C-ELV-CS-1165: Expenses: 1 82068.4
- C-ELV-CS-1175: Expenses: 1 93342.5
- C-ELV-CS-1185: Expenses: 1 223315

| ID | WBS | Activity | Duration | Start | Finish | Predecessors | Total float | Free float | Cost | AREA |
| --- | --- | --- | --- | --- | --- | --- | --- | --- | --- | --- |
|  | 4 | **IP, SMATV & QAM Television System** |  | 2015-11-19 | 2016-04-14 |  |  |  |  |  |
| C-ELV-SMATV-1155 |  | Installation of SMATV first Fix Conduits, Boxes within block work , Gypsum Boards & Raised FLooring at level 27 | 20d | 2015-11-19 | 2015-12-12 | C-F-P-703, C-F-P-693, SD-CS-L27-1032, C-ELV-SMATV-1405 SS | 97d | 14d | 4,452.18 | GEN |
| C-ELV-SMATV-1195 |  | Installation of Cable Trays & Truncking at level 27 | 18d | 2015-12-26 | 2016-01-14 | C-ELV-CCTV-1195 SS+5d | 106d | 0d | 2,769.38 |  |
| C-ELV-SMATV-1165 |  | Installation of second fix (Cabling & Wirring etc..) at level 27 | 16d | 2016-01-16 | 2016-02-02 | C-ELV-SMATV-1155, C-ELV-SMATV-1195 | 115d | 0d | 10,388.41 | GEN |
| C-ELV-SMATV-1175 |  | Installation & Connection of Outlets, switches and splitter at level 27 | 18d | 2016-02-03 | 2016-02-24 | C-ELV-SMATV-1165 | 115d | 23d | 6,537.45 | GEN |
| C-ELV-SMATV-1185 |  | Installtion & Connection of SMATV & QAM fiber & receiver at level 27 | 20d | 2016-03-23 | 2016-04-14 | C-ELV-SMATV-1175, C-ELV-SMATV-1435 SS | 167d | 0d | 2,419.21 |  |
|  | 5 | **BMS system** |  | 2015-11-29 | 2016-04-21 |  |  |  |  |  |
| C-MEP-BMS-1155 |  | Installation of BMS first Fix Conduits, Boxes within block work , Gypsum Boards & Raised FLooring at level 27 | 20d | 2015-11-29 | 2015-12-22 | C-F-P-703, C-F-P-693, SD-CS-L27-912, C-MEP-BMS-1405 SS | 92d | 6d | 8,895.95 | GEN |
| C-MEP-BMS-1195 |  | Installation of Cable trays & Trunking at level 27 | 20d | 2015-12-31 | 2016-01-23 | C-ELV-SMATV-1195 SS+5d | 106d | 0d |  |  |
| C-MEP-BMS-1165 |  | Installation of BMS Cabling & Wirring at level 27 | 16d | 2016-01-24 | 2016-02-11 | C-MEP-BMS-1155, C-MEP-BMS-1195 | 106d | 0d | 11,861.27 | GEN |
| C-MEP-BMS-1175 |  | Installation & Connection of BMS Sensors, Relays, & Valves at level 27 | 20d | 2016-02-13 | 2016-03-06 | C-MEP-BMS-1165, C-MEP-PD-1185, C-MEP-PD-1175, C-MEP-FF-934, C-MEP-AC-1908, C-MEP-AC-1888, C-MEP-AC-1898 | 106d | 15d | 14,826.58 | GEN |
| C-MEP-BMS-1185 |  | Installtion & Connection of BMS Racks, Panels etc... at level 27 | 20d | 2016-03-30 | 2016-04-21 | C-MEP-BMS-1175, C-MEP-BMS-1435 SS | 191d | 0d | 14,826.58 |  |
|  | 1 | **MEP - Level 28** |  | 2015-11-07 | 2016-11-12 |  |  |  |  |  |
|  | 1 | **Electrical** |  | 2015-11-23 | 2016-11-12 |  |  |  |  |  |
| C-MEP-E-1626 |  | Installation of first Electrical Fix Conduits, Boxes within block work & Gypsum Boards at level 28 | 20d | 2015-11-23 | 2015-12-15 | C-F-P-813, C-MEP-E-1146 | 95d | 14d | 55,235.7 | GEN |
| C-MEP-E-1676 |  | Installation of Cable Trays & Truncking at level 28 | 18d | 2015-12-12 | 2016-01-02 | C-MEP-FF-1084 SS+10d, C-MEP-PD-1355 SS+5d, C-MEP-E-1196 | 68d | 0d | 21,017.55 |  |
| C-MEP-E-1636 |  | Installation of Electrical Second Fix (Cabling & Wirring etc..). at level 28 | 18d | 2016-01-03 | 2016-01-23 | C-MEP-E-1626, C-MEP-E-1676, C-MEP-E-1156 | 85d | 0d | 190,528.33 | GEN |
| C-MEP-E-1646 |  | Installation & Connection of Electrical DB's, SMDB's at level 28 | 16d | 2016-01-24 | 2016-02-11 | C-MEP-E-1636, C-MEP-E-1526 SS | 89d | 19d | 78,921.15 | GEN |
| C-MEP-E-1666 |  | Installation & Connection of Lighting Fixtures & Sockets at level 28 | 14d | 2016-10-27 | 2016-11-12 | C-MEP-E-1636, C-F-CF-1927, C-F-CF-1917, C-F-WF-1094, C-F-WF-1104, C-MEP-E-1486, C-F-P-LSF-582 FF | 90d | 0d | 71,857.69 | GEN |
|  | 2 | **HVAC** |  | 2015-11-07 | 2016-08-23 |  |  |  |  |  |
| C-MEP-AC-2168 |  | Installation of Ductwork, Insulation & Dampers at level 28 | 23d | 2015-11-07 | 2015-12-02 | C-F-P-813 SS, C-MEP-AC-1928, SD-CS-L28-732 | 67d | 0d | 140,612.08 | GEN |
| C-MEP-AC-2188 |  | Installation of Chilled Water Pipes & Valves at level 28 | 25d | 2015-11-18 | 2015-12-16 | C-MEP-AC-2168 SS+10d, C-MEP-AC-1228 | 120d | 0d | 30,741.92 | GEN |
| C-MEP-AC-2228 |  | Installation of HVAC equipments AHU's, FCU's, ERU's, VAV's, CAV's & Fans at level 28 | 25d | 2015-12-12 | 2016-01-10 | C-MEP-AC-2218 FF, C-MEP-AC-2208 FF, C-MEP-AC-2168 SS | 136d | 41d | 49,231.47 | GEN |
| C-MEP-AC-2208 |  | Pressure testing & Insulation of Chilled Water Pipes at level 28 | 12d | 2015-12-17 | 2015-12-31 | C-MEP-AC-2188 | 144d | 0d | 8,821.1 | GEN |
| C-MEP-AC-2198 |  | Installation of Chilled Water Pipes Control Devices & Isolator at level 28 | 8d | 2016-01-02 | 2016-01-10 | C-MEP-AC-2208 | 156d | 67d | 2,889.38 | GEN |
| C-MEP-AC-2218 |  | Pressure testing of Ductwork at level 28 | 8d | 2016-01-02 | 2016-01-10 | C-MEP-AC-2168, C-MEP-AC-1898 SS | 114d | 0d |  | GEN |
| C-MEP-AC-2178 |  | Installation of Silencers, Attenuators, Isolators & Detectors at level 28 | 12d | 2016-01-11 | 2016-01-24 | C-MEP-AC-2218 | 144d | 55d | 28,274.51 | GEN |
| C-MEP-AC-2238 |  | Installation of Grilles, Diffusers & Controller at level 28 | 12d | 2016-08-10 | 2016-08-23 | C-MEP-AC-2228, C-F-CF-1927, C-F-CF-1917, C-F-WF-1104 FF, C-F-CF-1917 FF, C-F-WF-1094 FF, C-MEP-AC-1998 | 133d | 38d | 55,880.87 | GEN |

Notes:
- C-ELV-SMATV-1155: Expenses: 1 4452.18
- C-ELV-SMATV-1195: Expenses: 1 2769.38
- C-ELV-SMATV-1165: Expenses: 1 10388.4
- C-ELV-SMATV-1175: Expenses: 1 6537.45
- C-ELV-SMATV-1185: Expenses: 1 2419.21
- C-MEP-BMS-1155: Expenses: 1 8895.95
- C-MEP-BMS-1165: Expenses: 1 11861.3
- C-MEP-BMS-1175: Expenses: 1 14826.6
- C-MEP-BMS-1185: Expenses: 1 14826.6
- C-MEP-E-1626: Expenses: 1 55235.7
- C-MEP-E-1676: Expenses: 1 21017.5
- C-MEP-E-1636: Expenses: 1 57962.7; 2 132566
- C-MEP-E-1646: Expenses: 1 78921.1
- C-MEP-E-1666: Expenses: 1 71857.7
- C-MEP-AC-2168: Expenses: 1 140612
- C-MEP-AC-2188: Expenses: 1 30741.9
- C-MEP-AC-2228: Expenses: 1 49231.5
- C-MEP-AC-2208: Expenses: 1 8821.1
- C-MEP-AC-2198: Expenses: 1 2889.38
- C-MEP-AC-2178: Expenses: 1 28274.5
- C-MEP-AC-2238: Expenses: 1 55880.9

| ID | WBS | Activity | Duration | Start | Finish | Predecessors | Total float | Free float | Cost | AREA |
| --- | --- | --- | --- | --- | --- | --- | --- | --- | --- | --- |
|  | 3 | **Fire Fighting** |  | 2015-11-18 | 2016-05-14 |  |  |  |  |  |
| C-MEP-FF-1084 |  | Installation of FIre fighting Pipes at level 28 | 25d | 2015-11-18 | 2015-12-16 | C-MEP-AC-2168 SS+10d, SD-CS-L28-752 | 78d | 0d | 45,406.88 | GEN |
| C-MEP-FF-1104 |  | Pressure testing of fire fighting pipes at level 28 | 8d | 2015-12-17 | 2015-12-27 | C-MEP-FF-1084 | 128d | 0d | 5,280.67 | GEN |
| C-MEP-FF-1094 |  | Installation of fire Fighting Valves at level 28 | 20d | 2015-12-28 | 2016-01-19 | C-MEP-FF-1104 | 128d | 33d | 18,427.34 | GEN |
| C-MEP-FF-1114 |  | Installation of Fire Fighting Sprinklers & Fire hose Cabinets & Extinguishers at level 28 | 14d | 2016-04-28 | 2016-05-14 | C-MEP-FF-1094, C-F-CF-1917, C-F-CF-1907, C-MEP-FF-1104 | 159d | 0d | 64,097.37 | GEN |
|  | 4 | **Plumbing & Drainage** |  | 2015-12-06 | 2016-08-17 |  |  |  |  |  |
| C-MEP-PD-1355 |  | Installation of Water Pipes & Valves (Hot & Cold atc..) at level 28 | 20d | 2015-12-06 | 2015-12-29 | C-MEP-FF-1084 SS, C-F-P-823, SD-CS-L28-792 | 68d | 0d | 83,874.06 | GEN |
| C-MEP-PD-1365 |  | Installation drainage Pipes at level 28 | 25d | 2015-12-06 | 2016-01-04 | C-MEP-PD-1355 SS, C-MEP-PD-1165 SS | 111d | 0d | 30,204.4 | GEN |
| C-MEP-PD-1375 |  | Pressure testing & Insullation of water pipes at level 28 | 8d | 2015-12-30 | 2016-01-07 | C-MEP-PD-1355, C-MEP-PD-1175 SS | 114d | 0d | 9,573.63 | GEN |
| C-MEP-PD-1385 |  | Pressure testing of drainage pipes at level 28 | 8d | 2016-01-05 | 2016-01-13 | C-MEP-PD-1365 | 133d | 38d | 1,651.42 | GEN |
| C-MEP-PD-1395 |  | Installation of Outlets, Drains, Gullies, Cowls, & Clean out at level 28 | 20d | 2016-07-26 | 2016-08-17 | C-MEP-PD-1375, C-MEP-PD-1375 FF, C-F-FF-1094, C-F-WF-1094, C-F-FF-1094 FF, C-F-WF-1114, C-F-WF-1094 FF, C-F-DW-1094, C-MEP-PD-1095, C-F-P-LSF-582 FF | 154d | 44d | 13,120.28 | GEN |
|  | 7 | **ELV systems** |  | 2015-12-06 | 2016-08-06 |  |  |  |  |  |
|  | 1 | **Room Management System** |  | 2015-12-06 | 2016-05-22 |  |  |  |  |  |
| C-ELV-RMS-1355 |  | Installation of RMS first fix (Conduits, Boxes within block work , Gypsum Boards & Raised FLooring at level 28 | 20d | 2015-12-06 | 2015-12-29 | C-F-P-823, C-F-P-813, SD-CS-L28-972, C-ELV-RMS-1155 SS | 72d | 0d | 11,902.78 | GEN |
| C-ELV-RMS-1395 |  | Installation of Cable Trays & Truncking at level 28 | 25d | 2015-12-17 | 2016-01-16 | C-ELV-CS-1395 SS+5d | 95d | 0d | 2,769.38 |  |
| C-ELV-RMS-1365 |  | Installation of second fix (Cabling & Wirring etc..) at level 28 | 25d | 2016-01-17 | 2016-02-15 | C-ELV-RMS-1355, C-ELV-RMS-1395 | 101d | 0d | 11,902.78 | GEN |
| C-ELV-RMS-1375 |  | Installation & Connection of ethernets & HVAC thermostates etc.. at level 28 | 25d | 2016-02-16 | 2016-03-15 | C-ELV-RMS-1365 | 101d | 12d | 27,773.16 | GEN |
| C-ELV-RMS-1385 |  | Installtion & Connection of Panels, Controller, switches, server etc..) at level 28 | 20d | 2016-04-30 | 2016-05-22 | C-ELV-RMS-1375, C-ELV-RMS-1185 SS | 175d | 0d | 27,773.16 |  |
|  | 12 | **Fire Alarm & Detection System** |  | 2015-12-06 | 2016-05-21 |  |  |  |  |  |
| C-ELV-FA-1355 |  | Installation of FA first Fix Conduits, Boxes within block work , Gypsum Boards & Raised FLooring at level 28 | 20d | 2015-12-06 | 2015-12-29 | C-F-P-823, C-F-P-813, C-ELV-FA-1155 SS | 72d | 0d | 13,660.92 | GEN |
| C-ELV-FA-1395 |  | Installation of Cable Trays & Truncking at level 28 | 25d | 2015-12-30 | 2016-01-27 | C-ELV-MSPA-1395 SS+5d, SD-CS-L28-1012 | 95d | 0d | 2,769.38 |  |
| C-ELV-FA-1365 |  | Installation of second fix (Cabling & Wirring etc..) at level 28 | 20d | 2016-01-28 | 2016-02-21 | C-ELV-FA-1355, C-ELV-FA-1395 | 96d | 0d | 22,768.2 | GEN |
| C-ELV-FA-1375 |  | Installation & Connection of heat detector, smoke detector, flame detector etc.. at level 28 | 25d | 2016-02-22 | 2016-03-21 | C-ELV-FA-1365 | 96d | 7d | 27,321.84 | GEN |
| C-ELV-FA-1385 |  | Installtion & Connection of Racks & Panels at level 28 | 20d | 2016-04-28 | 2016-05-21 | C-ELV-FA-1375, C-ELV-FA-1185 SS | 156d | 0d | 27,321.84 |  |

Notes:
- C-MEP-FF-1084: Expenses: 1 45406.9
- C-MEP-FF-1104: Expenses: 1 5280.67
- C-MEP-FF-1094: Expenses: 1 18427.3
- C-MEP-FF-1114: Expenses: 1 64097.4
- C-MEP-PD-1355: Expenses: 1 83874.1
- C-MEP-PD-1365: Expenses: 1 30204.4
- C-MEP-PD-1375: Expenses: 1 9573.63
- C-MEP-PD-1385: Expenses: 1 1651.42
- C-MEP-PD-1395: Expenses: 1 13120.3
- C-ELV-RMS-1355: Expenses: 1 11902.8
- C-ELV-RMS-1395: Expenses: 1 2769.38
- C-ELV-RMS-1365: Expenses: 1 11902.8
- C-ELV-RMS-1375: Expenses: 1 27773.2
- C-ELV-RMS-1385: Expenses: 1 27773.2
- C-ELV-FA-1355: Expenses: 1 13660.9
- C-ELV-FA-1395: Expenses: 1 2769.38
- C-ELV-FA-1365: Expenses: 1 22768.2
- C-ELV-FA-1375: Expenses: 1 27321.8
- C-ELV-FA-1385: Expenses: 1 27321.8

| ID | WBS | Activity | Duration | Start | Finish | Predecessors | Total float | Free float | Cost | AREA |
| --- | --- | --- | --- | --- | --- | --- | --- | --- | --- | --- |
|  | 2 | **Music System & Public Address System** |  | 2015-12-24 | 2016-04-21 |  |  |  |  |  |
| C-ELV-MSPA-1395 |  | Installation of Cable Trays & Truncking at level 28 | 25d | 2015-12-24 | 2016-01-21 | C-ELV-RMS-1395 SS+5d | 95d | 0d | 2,769.38 |  |
| C-ELV-MSPA-1355 |  | Installation of MS/PA first fix (Conduits, Boxes within block work, Gypsum Boards & Raised FLooring at level 28 | 20d | 2016-01-07 | 2016-01-30 | C-F-P-823, C-F-P-813, SD-CS-L28-992, C-ELV-MSPA-1155 | 65d | 0d | 6,994.34 | GEN |
| C-ELV-MSPA-1365 |  | Installation of second fix (Cabling & Wirring Etc..) at level 28 | 25d | 2016-01-31 | 2016-02-29 | C-ELV-MSPA-1355, C-ELV-MSPA-1395 | 89d | 0d | 6,994.34 | GEN |
| C-ELV-MSPA-1375 |  | Installation & Connection of speakers, Amplifier & Controller at level 28 | 25d | 2016-03-01 | 2016-03-29 | C-ELV-MSPA-1365 | 89d | 0d | 16,320.12 | GEN |
| C-ELV-MSPA-1385 |  | Installtion & Connection of Media hub, panels and processor at level 28 | 20d | 2016-03-30 | 2016-04-21 | C-ELV-MSPA-1375, C-ELV-MSPA-1185 SS | 181d | 0d | 16,320.12 |  |
|  | 3 | **IP CCTV & Access Control System** |  | 2015-12-06 | 2016-06-05 |  |  |  |  |  |
| C-ELV-CCTV-1355 |  | Installation of CCTV first Fix Conduits, Boxes within block work, Gypsum Boards & Raised FLooring at level 28 | 20d | 2015-12-06 | 2015-12-29 | C-F-P-823, C-F-P-813, SD-CS-L28-1032, C-ELV-CCTV-1155 SS | 84d | 0d | 8,161.35 | GEN |
| C-ELV-CCTV-1395 |  | Installation of Cable Trays & Truncking at level 28 | 25d | 2016-01-05 | 2016-02-02 | C-ELV-FA-1395 SS+5d | 95d | 0d | 2,769.38 |  |
| C-ELV-CCTV-1365 |  | Installation of second fix (Cabling & Wirring etc..) at level 28 | 20d | 2016-02-03 | 2016-02-27 | C-ELV-CCTV-1355, C-ELV-CCTV-1395 | 98d | 0d | 19,043.14 | GEN |
| C-ELV-CCTV-1375 |  | Installation & Connection of Camera's & Alarms at level 28 | 18d | 2016-02-28 | 2016-03-19 | C-ELV-CCTV-1365 | 98d | 9d | 183,698.91 | GEN |
| C-ELV-CCTV-1385 |  | Installtion & Connection of Racks, Panels etc... at level 28 | 25d | 2016-05-08 | 2016-06-05 | C-ELV-CCTV-1375 FF, C-ELV-CCTV-1185 SS | 123d | 0d | 7,322.52 |  |
|  | 7 | **Communication System** |  | 2015-12-06 | 2016-08-06 |  |  |  |  |  |
| C-ELV-CS-1355 |  | Installation of CS first fix (Conduits, Boxes within block work, Gypsum Boards & Raised FLooring at level 28 | 20d | 2015-12-06 | 2015-12-29 | C-F-P-823, C-F-P-813, SD-CS-L28-952, C-ELV-CS-1155 SS | 72d | 0d | 27,356.12 | GEN |
| C-ELV-CS-1395 |  | Installation of Cable Trays & Truncking at level 28 | 18d | 2015-12-12 | 2016-01-02 | C-MEP-E-1676 SS, C-ELV-CS-1195 SS | 71d | 0d | 2,769.38 |  |
| C-ELV-CS-1365 |  | Installation of second fix (Cabling & Wirring etc..) at level 28 | 25d | 2016-01-03 | 2016-01-31 | C-ELV-CS-1355, C-ELV-CS-1395 | 113d | 0d | 82,068.35 | GEN |
| C-ELV-CS-1375 |  | Installation & Connection of Wireless Access points & IP dect phone & RJ 45 at level 28 | 25d | 2016-02-01 | 2016-03-01 | C-ELV-CS-1365 | 113d | 24d | 93,342.54 | GEN |
| C-ELV-CS-1385 |  | Installtion & Connection of Controller & Instrumentation at level 28 | 20d | 2016-07-14 | 2016-08-06 | C-ELV-CS-1375, C-ELV-CS-1185 SS | 137d | 0d | 223,314.69 |  |
|  | 4 | **IP, SMATV & QAM Television System** |  | 2015-12-06 | 2016-04-14 |  |  |  |  |  |
| C-ELV-SMATV-1355 |  | Installation of SMATV first Fix Conduits, Boxes within block work , Gypsum Boards & Raised FLooring at level 28 | 20d | 2015-12-06 | 2015-12-29 | C-F-P-823, C-F-P-813, SD-CS-L28-1052, C-ELV-SMATV-1155 SS | 83d | 0d | 4,452.18 | GEN |
| C-ELV-SMATV-1395 |  | Installation of Cable Trays & Truncking at level 28 | 25d | 2016-01-11 | 2016-02-08 | C-ELV-CCTV-1395 SS+5d | 95d | 0d | 2,769.38 |  |
| C-ELV-SMATV-1365 |  | Installation of second fix (Cabling & Wirring etc..) at level 28 | 16d | 2016-02-09 | 2016-02-28 | C-ELV-SMATV-1355, C-ELV-SMATV-1395 | 97d | 0d | 10,388.41 | GEN |
| C-ELV-SMATV-1375 |  | Installation & Connection of Outlets, switches and splitter at level 28 | 18d | 2016-02-29 | 2016-03-20 | C-ELV-SMATV-1365 | 97d | 2d | 6,537.45 | GEN |
| C-ELV-SMATV-1385 |  | Installtion & Connection of SMATV & QAM fiber & receiver at level 28 | 20d | 2016-03-23 | 2016-04-14 | C-ELV-SMATV-1375, C-ELV-SMATV-1185 SS | 167d | 0d | 2,419.21 |  |

Notes:
- C-ELV-MSPA-1395: Expenses: 1 2769.38
- C-ELV-MSPA-1355: Expenses: 1 6994.34
- C-ELV-MSPA-1365: Expenses: 1 6994.34
- C-ELV-MSPA-1375: Expenses: 1 16320.1
- C-ELV-MSPA-1385: Expenses: 1 16320.1
- C-ELV-CCTV-1355: Expenses: 1 8161.35
- C-ELV-CCTV-1395: Expenses: 1 2769.38
- C-ELV-CCTV-1365: Expenses: 1 19043.1
- C-ELV-CCTV-1375: Expenses: 1 183699
- C-ELV-CCTV-1385: Expenses: 1 7322.52
- C-ELV-CS-1355: Expenses: 1 27356.1
- C-ELV-CS-1395: Expenses: 1 2769.38
- C-ELV-CS-1365: Expenses: 1 82068.4
- C-ELV-CS-1375: Expenses: 1 93342.5
- C-ELV-CS-1385: Expenses: 1 223315
- C-ELV-SMATV-1355: Expenses: 1 4452.18
- C-ELV-SMATV-1395: Expenses: 1 2769.38
- C-ELV-SMATV-1365: Expenses: 1 10388.4
- C-ELV-SMATV-1375: Expenses: 1 6537.45
- C-ELV-SMATV-1385: Expenses: 1 2419.21

| ID | WBS | Activity | Duration | Start | Finish | Predecessors | Total float | Free float | Cost | AREA |
| --- | --- | --- | --- | --- | --- | --- | --- | --- | --- | --- |
|  | 5 | **BMS system** |  | 2015-12-06 | 2016-04-21 |  |  |  |  |  |
| C-MEP-BMS-1355 |  | Installation of BMS first Fix Conduits, Boxes within block work , Gypsum Boards & Raised FLooring at level 28 | 20d | 2015-12-06 | 2015-12-29 | C-F-P-823, C-F-P-813, SD-CS-L28-932, C-MEP-BMS-1155 SS | 86d | 0d | 8,895.95 | GEN |
| C-MEP-BMS-1395 |  | Installation of Cable trays & Trunking at level 28 | 20d | 2016-01-17 | 2016-02-08 | C-ELV-SMATV-1395 SS+5d | 95d | 0d |  |  |
| C-MEP-BMS-1365 |  | Installation of BMS Cabling & Wirring at level 28 | 16d | 2016-02-09 | 2016-02-28 | C-MEP-BMS-1355, C-MEP-BMS-1395 | 95d | 0d | 11,861.27 | GEN |
| C-MEP-BMS-1375 |  | Installation & Connection of BMS Sensors, Relays, & Valves at level 28 | 20d | 2016-02-29 | 2016-03-22 | C-MEP-BMS-1365, C-MEP-PD-1385, C-MEP-PD-1375, C-MEP-FF-1094, C-MEP-AC-2228, C-MEP-AC-2208, C-MEP-AC-2218 | 95d | 6d | 14,826.58 | GEN |
| C-MEP-BMS-1385 |  | Installtion & Connection of BMS Racks, Panels etc... at level 28 | 20d | 2016-03-30 | 2016-04-21 | C-MEP-BMS-1375, C-MEP-BMS-1185 SS | 191d | 0d | 14,826.58 |  |
|  | 2 | **MEP - Level 29** |  | 2015-11-07 | 2016-11-28 |  |  |  |  |  |
|  | 1 | **Electrical** |  | 2015-11-23 | 2016-11-28 |  |  |  |  |  |
| C-MEP-E-1746 |  | Installation of first Electrical Fix Conduits, Boxes within block work & Gypsum Boards at level 29 | 20d | 2015-11-23 | 2015-12-15 | C-F-P-873, C-MEP-E-1266 | 57d | 14d | 55,235.7 | GEN |
| C-MEP-E-1796 |  | Installation of Cable Trays & Truncking at level 29 | 18d | 2015-12-12 | 2016-01-02 | C-MEP-FF-1164 SS+10d, C-MEP-PD-1455 SS+5d, C-MEP-E-1316 | 43d | 0d | 21,017.55 |  |
| C-MEP-E-1756 |  | Installation of Electrical Second Fix (Cabling & Wirring etc..).at level 29 | 18d | 2016-01-03 | 2016-01-23 | C-MEP-E-1746, C-MEP-E-1796, C-MEP-E-1276 | 43d | 0d | 190,528.33 | GEN |
| C-MEP-E-1766 |  | Installation & Connection of Electrical DB's, SMDB's at level 29 | 16d | 2016-01-24 | 2016-02-11 | C-MEP-E-1756, C-MEP-E-1586 | 43d | 9d | 78,921.15 | GEN |
| C-MEP-E-1786 |  | Installation & Connection of Lighting Fixtures & Sockets at level 29 | 14d | 2016-11-13 | 2016-11-28 | C-MEP-E-1756, C-F-CF-2067, C-F-CF-2057, C-F-WF-1174, C-F-WF-1184, C-MEP-E-1846 | 86d | 0d | 71,857.69 | GEN |
|  | 2 | **HVAC** |  | 2015-11-07 | 2016-08-31 |  |  |  |  |  |
| C-MEP-AC-2328 |  | Installation of Ductwork, Insulation & Dampers at level 29 | 23d | 2015-11-07 | 2015-12-02 | C-F-P-873 SS, C-MEP-AC-2408, SD-CS-L29-752 | 53d | 0d | 140,612.08 | GEN |
| C-MEP-AC-2348 |  | Installation of Chilled Water Pipes & Valves at level 29 | 25d | 2015-11-18 | 2015-12-16 | C-MEP-AC-2328 SS+10d, C-MEP-AC-1548 | 125d | 0d | 30,741.92 | GEN |
| C-MEP-AC-2388 |  | Installation of HVAC equipments AHU's, FCU's, ERU's, VAV's, CAV's & Fans at level 29 | 25d | 2015-12-12 | 2016-01-10 | C-MEP-AC-2378 FF, C-MEP-AC-2368 FF, C-MEP-AC-2328 SS | 142d | 41d | 49,231.47 | GEN |
| C-MEP-AC-2368 |  | Pressure testing & Insulation of Chilled Water Pipes at level 29 | 12d | 2015-12-17 | 2015-12-31 | C-MEP-AC-2348 | 150d | 0d | 8,821.1 | GEN |
| C-MEP-AC-2358 |  | Installation of Chilled Water Pipes Control Devices & Isolator at level 29 | 8d | 2016-01-02 | 2016-01-10 | C-MEP-AC-2368 | 162d | 67d | 2,889.38 | GEN |
| C-MEP-AC-2378 |  | Pressure testing of Ductwork at level 29 | 8d | 2016-01-02 | 2016-01-10 | C-MEP-AC-2328, C-MEP-AC-2218 SS | 114d | 0d |  | GEN |
| C-MEP-AC-2338 |  | Installation of Silencers, Attenuators, Isolators & Detectors at level 29 | 12d | 2016-01-11 | 2016-01-24 | C-MEP-AC-2378 | 150d | 55d | 28,274.51 | GEN |
| C-MEP-AC-2398 |  | Installation of Grilles, Diffusers & Controller at level 29 | 12d | 2016-08-18 | 2016-08-31 | C-MEP-AC-2388, C-F-CF-2067, C-F-CF-2057, C-F-WF-1184 FF, C-F-CF-2057 FF, C-F-WF-1174 FF, C-MEP-AC-2478 | 126d | 45d | 55,880.87 | GEN |
|  | 3 | **Fire Fighting** |  | 2015-11-18 | 2016-05-14 |  |  |  |  |  |
| C-MEP-FF-1164 |  | Installation of FIre fighting Pipes at level 29 | 25d | 2015-11-18 | 2015-12-16 | C-MEP-AC-2328 SS+10d, SD-CS-L29-772 | 53d | 0d | 45,406.88 | GEN |
| C-MEP-FF-1184 |  | Pressure testing of fire fighting pipes at level 29 | 8d | 2015-12-17 | 2015-12-27 | C-MEP-FF-1164, C-MEP-FF-1104 SS | 134d | 0d | 5,280.67 | GEN |
| C-MEP-FF-1174 |  | Installation of fire Fighting Valves at level 29 | 20d | 2015-12-28 | 2016-01-19 | C-MEP-FF-1184 | 134d | 33d | 18,427.34 | GEN |
| C-MEP-FF-1194 |  | Installation of Fire Fighting Sprinklers & Fire hose Cabinets & Extinguishers at level 29 | 14d | 2016-04-28 | 2016-05-14 | C-MEP-FF-1174, C-F-CF-2057, C-F-CF-2047, C-MEP-FF-1184 | 159d | 0d | 64,097.37 | GEN |

Notes:
- C-MEP-BMS-1355: Expenses: 1 8895.95
- C-MEP-BMS-1365: Expenses: 1 11861.3
- C-MEP-BMS-1375: Expenses: 1 14826.6
- C-MEP-BMS-1385: Expenses: 1 14826.6
- C-MEP-E-1746: Expenses: 1 55235.7
- C-MEP-E-1796: Expenses: 1 21017.5
- C-MEP-E-1756: Expenses: 1 57962.7; 2 132566
- C-MEP-E-1766: Expenses: 1 78921.1
- C-MEP-E-1786: Expenses: 1 71857.7
- C-MEP-AC-2328: Expenses: 1 140612
- C-MEP-AC-2348: Expenses: 1 30741.9
- C-MEP-AC-2388: Expenses: 1 49231.5
- C-MEP-AC-2368: Expenses: 1 8821.1
- C-MEP-AC-2358: Expenses: 1 2889.38
- C-MEP-AC-2338: Expenses: 1 28274.5
- C-MEP-AC-2398: Expenses: 1 55880.9
- C-MEP-FF-1164: Expenses: 1 45406.9
- C-MEP-FF-1184: Expenses: 1 5280.67
- C-MEP-FF-1174: Expenses: 1 18427.3
- C-MEP-FF-1194: Expenses: 1 64097.4

| ID | WBS | Activity | Duration | Start | Finish | Predecessors | Total float | Free float | Cost | AREA |
| --- | --- | --- | --- | --- | --- | --- | --- | --- | --- | --- |
|  | 4 | **Plumbing & Drainage** |  | 2015-12-06 | 2016-08-25 |  |  |  |  |  |
| C-MEP-PD-1455 |  | Installation of Water Pipes & Valves (Hot & Cold atc..) at level 29 | 20d | 2015-12-06 | 2015-12-29 | C-MEP-FF-1164 SS, C-F-P-883, SD-CS-L29-812 | 43d | 0d | 83,874.06 | GEN |
| C-MEP-PD-1465 |  | Installation drainage Pipes at level 29 | 25d | 2015-12-06 | 2016-01-04 | C-MEP-PD-1455 SS, C-MEP-PD-1365 SS | 111d | 0d | 30,204.4 | GEN |
| C-MEP-PD-1475 |  | Pressure testing & Insullation of water pipes at level 29 | 8d | 2015-12-30 | 2016-01-07 | C-MEP-PD-1455, C-MEP-PD-1375 SS | 114d | 4d | 9,573.63 | GEN |
| C-MEP-PD-1485 |  | Pressure testing of drainage pipes at level 29 | 8d | 2016-01-05 | 2016-01-13 | C-MEP-PD-1465 | 139d | 38d | 1,651.42 | GEN |
| C-MEP-PD-1495 |  | Installation of Outlets, Drains, Gullies, Cowls, & Clean out at level 29 | 20d | 2016-08-03 | 2016-08-25 | C-MEP-PD-1475, C-MEP-PD-1475 FF, C-F-FF-1174, C-F-WF-1174, C-F-FF-1174 FF, C-F-WF-1194, C-F-WF-1174 FF, C-F-DW-1174, C-MEP-PD-1245, C-F-P-LSF-592 FF | 137d | 37d | 13,120.28 | GEN |
|  | 7 | **ELV systems** |  | 2015-12-06 | 2016-08-06 |  |  |  |  |  |
|  | 1 | **Room Management System** |  | 2015-12-06 | 2016-05-22 |  |  |  |  |  |
| C-ELV-RMS-1455 |  | Installation of RMS first fix (Conduits, Boxes within block work , Gypsum Boards & Raised FLooring at level 29 | 20d | 2015-12-06 | 2015-12-29 | C-F-P-883, C-F-P-873, SD-CS-L29-992, C-ELV-RMS-1355 SS | 72d | 4d | 11,902.78 | GEN |
| C-ELV-RMS-1495 |  | Installation of Cable Trays & Truncking at level 29 | 25d | 2015-12-17 | 2016-01-16 | C-ELV-CS-1495 SS+5d | 101d | 0d | 2,769.38 |  |
| C-ELV-RMS-1465 |  | Installation of second fix (Cabling & Wirring etc..) at level 29 | 25d | 2016-01-17 | 2016-02-15 | C-ELV-RMS-1455, C-ELV-RMS-1495 | 107d | 0d | 11,902.78 | GEN |
| C-ELV-RMS-1475 |  | Installation & Connection of ethernets & HVAC thermostates etc.. at level 29 | 25d | 2016-02-16 | 2016-03-15 | C-ELV-RMS-1465 | 107d | 12d | 27,773.16 | GEN |
| C-ELV-RMS-1485 |  | Installtion & Connection of Panels, Controller, switches, server etc..) at level 29 | 20d | 2016-04-30 | 2016-05-22 | C-ELV-RMS-1475, C-ELV-RMS-1385 SS | 175d | 0d | 27,773.16 |  |
|  | 12 | **Fire Alarm & Detection System** |  | 2015-12-30 | 2016-05-21 |  |  |  |  |  |
| C-ELV-FA-1455 |  | Installation of FA first Fix Conduits, Boxes within block work , Gypsum Boards & Raised FLooring at level 29 | 20d | 2015-12-30 | 2016-01-21 | C-F-P-883, C-F-P-873, C-ELV-FA-1355 | 72d | 0d | 13,660.92 | GEN |
| C-ELV-FA-1495 |  | Installation of Cable Trays & Truncking at level 29 | 25d | 2015-12-30 | 2016-01-27 | C-ELV-MSPA-1495 SS+5d, SD-CS-L29-1032 | 101d | 0d | 2,769.38 |  |
| C-ELV-FA-1465 |  | Installation of second fix (Cabling & Wirring etc..) at level 29 | 20d | 2016-01-28 | 2016-02-21 | C-ELV-FA-1455, C-ELV-FA-1495 | 102d | 0d | 22,768.2 | GEN |
| C-ELV-FA-1475 |  | Installation & Connection of heat detector, smoke detector, flame detector etc.. at level 29 | 25d | 2016-02-22 | 2016-03-21 | C-ELV-FA-1465 | 102d | 7d | 27,321.84 | GEN |
| C-ELV-FA-1485 |  | Installtion & Connection of Racks & Panels at level 29 | 20d | 2016-04-28 | 2016-05-21 | C-ELV-FA-1475, C-ELV-FA-1385 SS | 156d | 0d | 27,321.84 |  |
|  | 2 | **Music System & Public Address System** |  | 2015-12-24 | 2016-05-15 |  |  |  |  |  |
| C-ELV-MSPA-1495 |  | Installation of Cable Trays & Truncking at level 29 | 25d | 2015-12-24 | 2016-01-21 | C-ELV-RMS-1495 SS+5d | 101d | 0d | 2,769.38 |  |
| C-ELV-MSPA-1455 |  | Installation of MS/PA first fix (Conduits, Boxes within block work, Gypsum Boards & Raised FLooring at level 29 | 20d | 2016-01-07 | 2016-01-30 | C-F-P-883, C-F-P-873, SD-CS-L29-1012, C-ELV-MSPA-1355 SS | 65d | 0d | 6,994.34 | GEN |
| C-ELV-MSPA-1465 |  | Installation of second fix (Cabling & Wirring etc..) at level 29 | 25d | 2016-01-31 | 2016-02-29 | C-ELV-MSPA-1455, C-ELV-MSPA-1495 | 95d | 0d | 6,994.34 | GEN |
| C-ELV-MSPA-1475 |  | Installation & Connection of speakers, Amplifier & Controller at level 29 | 25d | 2016-03-01 | 2016-03-29 | C-ELV-MSPA-1465 | 95d | 0d | 16,320.12 | GEN |
| C-ELV-MSPA-1485 |  | Installtion & Connection of Media hub, panels and processor at level 29 | 20d | 2016-04-23 | 2016-05-15 | C-ELV-MSPA-1475, C-ELV-MSPA-1385 | 181d | 0d | 16,320.12 |  |

Notes:
- C-MEP-PD-1455: Expenses: 1 83874.1
- C-MEP-PD-1465: Expenses: 1 30204.4
- C-MEP-PD-1475: Expenses: 1 9573.63
- C-MEP-PD-1485: Expenses: 1 1651.42
- C-MEP-PD-1495: Expenses: 1 13120.3
- C-ELV-RMS-1455: Expenses: 1 11902.8
- C-ELV-RMS-1495: Expenses: 1 2769.38
- C-ELV-RMS-1465: Expenses: 1 11902.8
- C-ELV-RMS-1475: Expenses: 1 27773.2
- C-ELV-RMS-1485: Expenses: 1 27773.2
- C-ELV-FA-1455: Expenses: 1 13660.9
- C-ELV-FA-1495: Expenses: 1 2769.38
- C-ELV-FA-1465: Expenses: 1 22768.2
- C-ELV-FA-1475: Expenses: 1 27321.8
- C-ELV-FA-1485: Expenses: 1 27321.8
- C-ELV-MSPA-1495: Expenses: 1 2769.38
- C-ELV-MSPA-1455: Expenses: 1 6994.34
- C-ELV-MSPA-1465: Expenses: 1 6994.34
- C-ELV-MSPA-1475: Expenses: 1 16320.1
- C-ELV-MSPA-1485: Expenses: 1 16320.1

| ID | WBS | Activity | Duration | Start | Finish | Predecessors | Total float | Free float | Cost | AREA |
| --- | --- | --- | --- | --- | --- | --- | --- | --- | --- | --- |
|  | 3 | **IP CCTV & Access Control System** |  | 2015-12-06 | 2016-06-05 |  |  |  |  |  |
| C-ELV-CCTV-1455 |  | Installation of CCTV first Fix Conduits, Boxes within block work, Gypsum Boards & Raised FLooring at level 29 | 20d | 2015-12-06 | 2015-12-29 | C-F-P-883, C-F-P-873, SD-CS-L29-1052, C-ELV-CCTV-1355 SS | 84d | 4d | 8,161.35 | GEN |
| C-ELV-CCTV-1495 |  | Installation of Cable Trays & Truncking at level 29 | 25d | 2016-01-05 | 2016-02-02 | C-ELV-FA-1495 SS+5d | 101d | 0d | 2,769.38 |  |
| C-ELV-CCTV-1465 |  | Installation of second fix (Cabling & Wirring etc..) at level 29 | 20d | 2016-02-03 | 2016-02-27 | C-ELV-CCTV-1455, C-ELV-CCTV-1495 | 104d | 0d | 19,043.14 | GEN |
| C-ELV-CCTV-1475 |  | Installation & Connection of Camera's & Alarms at level 29 | 18d | 2016-02-28 | 2016-03-19 | C-ELV-CCTV-1465 | 104d | 9d | 183,698.91 | GEN |
| C-ELV-CCTV-1485 |  | Installtion & Connection of Racks, Panels etc... at level 29 | 25d | 2016-05-08 | 2016-06-05 | C-ELV-CCTV-1475 FF, C-ELV-CCTV-1385 SS | 123d | 0d | 7,322.52 |  |
|  | 7 | **Communication System** |  | 2015-12-12 | 2016-08-06 |  |  |  |  |  |
| C-ELV-CS-1495 |  | Installation of Cable Trays & Truncking at level 29 | 18d | 2015-12-12 | 2016-01-02 | C-MEP-E-1796 SS, C-ELV-CS-1395 SS | 71d | 0d | 2,769.38 |  |
| C-ELV-CS-1455 |  | Installation of CS first fix (Conduits, Boxes within block work, Gypsum Boards & Raised FLooring at level 29 | 20d | 2015-12-30 | 2016-01-21 | C-F-P-883, C-F-P-873, SD-CS-L29-972, C-ELV-CS-1355 | 72d | 0d | 27,356.12 | GEN |
| C-ELV-CS-1465 |  | Installation of second fix (Cabling & Wirring etc..) at level 29 | 25d | 2016-01-23 | 2016-02-21 | C-ELV-CS-1455, C-ELV-CS-1495 | 102d | 0d | 82,068.35 | GEN |
| C-ELV-CS-1475 |  | Installation & Connection of Wireless Access points & IP dect phone & RJ 45 at level 29 | 25d | 2016-02-22 | 2016-03-21 | C-ELV-CS-1465 | 102d | 7d | 93,342.54 | GEN |
| C-ELV-CS-1485 |  | Installtion & Connection of Controller & Instrumentation at level 29 | 20d | 2016-07-14 | 2016-08-06 | C-ELV-CS-1475, C-ELV-CS-1385 SS | 137d | 0d | 223,314.69 |  |
|  | 4 | **IP, SMATV & QAM Television System** |  | 2015-12-30 | 2016-05-08 |  |  |  |  |  |
| C-ELV-SMATV-1455 |  | Installation of SMATV first Fix Conduits, Boxes within block work , Gypsum Boards & Raised FLooring at level 29 | 20d | 2015-12-30 | 2016-01-21 | C-F-P-883, C-F-P-873, SD-CS-L29-1072, C-ELV-SMATV-1355 | 83d | 0d | 4,452.18 | GEN |
| C-ELV-SMATV-1495 |  | Installation of Cable Trays & Truncking at level 29 | 25d | 2016-01-11 | 2016-02-08 | C-ELV-CCTV-1495 SS+5d | 101d | 0d | 2,769.38 |  |
| C-ELV-SMATV-1465 |  | Installation of second fix (Cabling & Wirring etc..) at level 29 | 16d | 2016-02-09 | 2016-02-28 | C-ELV-SMATV-1455, C-ELV-SMATV-1495 | 103d | 0d | 10,388.41 | GEN |
| C-ELV-SMATV-1475 |  | Installation & Connection of Outlets, switches and splitter at level 29 | 18d | 2016-02-29 | 2016-03-20 | C-ELV-SMATV-1465 | 103d | 8d | 6,537.45 | GEN |
| C-ELV-SMATV-1485 |  | Installtion & Connection of SMATV & QAM fiber & receiver at level 29 | 20d | 2016-04-16 | 2016-05-08 | C-ELV-SMATV-1475, C-ELV-SMATV-1385 | 167d | 0d | 2,419.21 |  |
|  | 5 | **BMS system** |  | 2015-12-06 | 2016-04-21 |  |  |  |  |  |
| C-MEP-BMS-1455 |  | Installation of BMS first Fix Conduits, Boxes within block work , Gypsum Boards & Raised FLooring at level 29 | 20d | 2015-12-06 | 2015-12-29 | C-F-P-883, C-F-P-873, SD-CS-L29-952, C-MEP-BMS-1355 SS | 86d | 4d | 8,895.95 | GEN |
| C-MEP-BMS-1495 |  | Installation of Cable trays & Trunking at level 29 | 20d | 2016-01-17 | 2016-02-08 | C-ELV-SMATV-1495 SS+5d | 101d | 0d |  |  |
| C-MEP-BMS-1465 |  | Installation of BMS Cabling & Wirring at level 29 | 16d | 2016-02-09 | 2016-02-28 | C-MEP-BMS-1455, C-MEP-BMS-1495 | 101d | 0d | 11,861.27 | GEN |
| C-MEP-BMS-1475 |  | Installation & Connection of BMS Sensors, Relays, & Valves at level 29 | 20d | 2016-02-29 | 2016-03-22 | C-MEP-BMS-1465, C-MEP-PD-1485, C-MEP-PD-1475, C-MEP-FF-1174, C-MEP-AC-2388, C-MEP-AC-2368, C-MEP-AC-2378 | 101d | 6d | 14,826.58 | GEN |
| C-MEP-BMS-1485 |  | Installtion & Connection of BMS Racks, Panels etc... at level 29 | 20d | 2016-03-30 | 2016-04-21 | C-MEP-BMS-1475, C-MEP-BMS-1385 SS | 191d | 0d | 14,826.58 |  |

Notes:
- C-ELV-CCTV-1455: Expenses: 1 8161.35
- C-ELV-CCTV-1495: Expenses: 1 2769.38
- C-ELV-CCTV-1465: Expenses: 1 19043.1
- C-ELV-CCTV-1475: Expenses: 1 183699
- C-ELV-CCTV-1485: Expenses: 1 7322.52
- C-ELV-CS-1495: Expenses: 1 2769.38
- C-ELV-CS-1455: Expenses: 1 27356.1
- C-ELV-CS-1465: Expenses: 1 82068.4
- C-ELV-CS-1475: Expenses: 1 93342.5
- C-ELV-CS-1485: Expenses: 1 223315
- C-ELV-SMATV-1455: Expenses: 1 4452.18
- C-ELV-SMATV-1495: Expenses: 1 2769.38
- C-ELV-SMATV-1465: Expenses: 1 10388.4
- C-ELV-SMATV-1475: Expenses: 1 6537.45
- C-ELV-SMATV-1485: Expenses: 1 2419.21
- C-MEP-BMS-1455: Expenses: 1 8895.95
- C-MEP-BMS-1465: Expenses: 1 11861.3
- C-MEP-BMS-1475: Expenses: 1 14826.6
- C-MEP-BMS-1485: Expenses: 1 14826.6

| ID | WBS | Activity | Duration | Start | Finish | Predecessors | Total float | Free float | Cost | AREA |
| --- | --- | --- | --- | --- | --- | --- | --- | --- | --- | --- |
|  | 49 | **MEP - Level 30** |  | 2015-11-11 | 2016-10-12 |  |  |  |  |  |
|  | 1 | **Electrical** |  | 2015-11-28 | 2016-10-12 |  |  |  |  |  |
| C-MEP-E-1986 |  | Installation of first Electrical Fix Conduits, Boxes within block work & Gypsum Boards at level 30 | 20d | 2015-11-28 | 2015-12-21 | C-F-P-993, C-MEP-E-1446 | 83d | 14d | 55,235.7 | GEN |
| C-MEP-E-2036 |  | Installation of Cable Trays & Truncking at level 30 | 18d | 2015-12-16 | 2016-01-06 | C-MEP-FF-1324 SS+10d, C-MEP-PD-1655 SS+5d, C-MEP-E-1496 | 67d | 0d | 21,017.55 |  |
| C-MEP-E-1996 |  | Installation of Electrical Second Fix (Cabling & Wirring etc..). at level 30 | 18d | 2016-01-07 | 2016-01-27 | C-MEP-E-1986, C-MEP-E-2036, C-MEP-E-1456 | 69d | 0d | 190,528.33 | GEN |
| C-MEP-E-2006 |  | Installation & Connection of Electrical DB's, SMDB's at level 30 | 16d | 2016-01-28 | 2016-02-16 | C-MEP-E-1996, C-MEP-E-1706 | 69d | 11d | 78,921.15 | GEN |
| C-MEP-E-2026 |  | Installation & Connection of Lighting Fixtures & Sockets at level 30 | 14d | 2016-09-27 | 2016-10-12 | C-MEP-E-1996, C-F-CF-2347, C-F-CF-2337, C-F-WF-1334, C-F-WF-1344, C-MEP-E-1546, C-F-P-LSF-602 FF | 126d | 25d | 71,857.69 | GEN |
|  | 2 | **HVAC** |  | 2015-11-11 | 2016-09-26 |  |  |  |  |  |
| C-MEP-AC-2648 |  | Installation of Ductwork, Insulation & Dampers at level 30 | 23d | 2015-11-11 | 2015-12-07 | C-F-P-993 SS, C-MEP-AC-2008, SD-CS-L30-772 | 58d | 0d | 140,612.08 | GEN |
| C-MEP-AC-2668 |  | Installation of Chilled Water Pipes & Valves at level 30 | 25d | 2015-11-23 | 2015-12-22 | C-MEP-AC-2648 SS+10d, C-MEP-AC-1708 | 118d | 0d | 30,741.92 | GEN |
| C-MEP-AC-2708 |  | Installation of HVAC equipments AHU's, FCU's, ERU's, VAV's, CAV's & Fans at level 30 | 25d | 2015-12-12 | 2016-01-10 | C-MEP-AC-2698 FF, C-MEP-AC-2688 FF, C-MEP-AC-2648 SS | 114d | 45d | 51,855.79 | GEN |
| C-MEP-AC-2688 |  | Pressure testing & Insulation of Chilled Water Pipes at level 30 | 12d | 2015-12-23 | 2016-01-05 | C-MEP-AC-2668 | 118d | 0d | 8,821.1 | GEN |
| C-MEP-AC-2698 |  | Pressure testing of Ductwork at level 30 | 8d | 2016-01-02 | 2016-01-10 | C-MEP-AC-2648, C-MEP-AC-2378 SS | 114d | 0d |  | GEN |
| C-MEP-AC-2678 |  | Installation of Chilled Water Pipes Control Devices & Isolator at level 30 | 8d | 2016-01-06 | 2016-01-14 | C-MEP-AC-2688 | 130d | 63d | 2,889.38 | GEN |
| C-MEP-AC-2658 |  | Installation of Silencers, Attenuators, Isolators & Detectors at level 30 | 12d | 2016-01-11 | 2016-01-24 | C-MEP-AC-2698 | 122d | 55d | 28,274.51 | GEN |
| C-MEP-AC-2718 |  | Installation of Grilles, Diffusers & Controller at level 30 | 12d | 2016-09-08 | 2016-09-26 | C-MEP-AC-2708, C-F-CF-2347, C-F-CF-2337, C-F-WF-1344 FF, C-F-CF-2337 FF, C-F-WF-1334 FF, C-MEP-AC-2078 SS | 90d | 39d | 55,880.87 | GEN |
|  | 3 | **Fire Fighting** |  | 2015-11-23 | 2016-06-12 |  |  |  |  |  |
| C-MEP-FF-1324 |  | Installation of FIre fighting Pipes at level 30 | 25d | 2015-11-23 | 2015-12-22 | C-MEP-AC-2648 SS+10d, SD-CS-L30-792 | 77d | 0d | 45,406.88 | GEN |
| C-MEP-FF-1344 |  | Pressure testing of fire fighting pipes at level 30 | 8d | 2015-12-23 | 2015-12-31 | C-MEP-FF-1324 | 102d | 0d | 5,280.67 | GEN |
| C-MEP-FF-1334 |  | Installation of fire Fighting Valves at level 30 | 20d | 2016-01-02 | 2016-01-24 | C-MEP-FF-1344 | 102d | 33d | 18,427.34 | GEN |
| C-MEP-FF-1354 |  | Installation of Fire Fighting Sprinklers & Fire hose Cabinets & Extinguishers at level 30 | 14d | 2016-05-28 | 2016-06-12 | C-MEP-FF-1334, C-F-CF-2337, C-F-CF-2327, C-MEP-FF-1344 | 144d | 0d | 64,097.37 | GEN |
|  | 4 | **Plumbing & Drainage** |  | 2015-12-10 | 2016-09-19 |  |  |  |  |  |
| C-MEP-PD-1655 |  | Installation of Water Pipes & Valves (Hot & Cold atc..) at level 30 | 20d | 2015-12-10 | 2016-01-03 | C-MEP-FF-1324 SS, C-F-P-1003, SD-CS-L30-832 | 67d | 0d | 83,874.06 | GEN |
| C-MEP-PD-1665 |  | Installation drainage Pipes at level 30 | 25d | 2015-12-10 | 2016-01-09 | C-MEP-PD-1655 SS, C-MEP-PD-1465 SS | 107d | 0d | 30,204.4 | GEN |
| C-MEP-PD-1675 |  | Pressure testing & Insullation of water pipes at level 30 | 8d | 2016-01-04 | 2016-01-12 | C-MEP-PD-1655, C-MEP-PD-1475 SS | 110d | 14d | 9,573.63 | GEN |
| C-MEP-PD-1685 |  | Pressure testing of drainage pipes at level 30 | 8d | 2016-01-10 | 2016-01-18 | C-MEP-PD-1665 | 107d | 38d | 1,651.42 | GEN |
| C-MEP-PD-1695 |  | Installation of Outlets, Drains, Gullies, Cowls, & Clean out at level 30 | 20d | 2016-08-24 | 2016-09-19 | C-MEP-PD-1675, C-MEP-PD-1675 FF, C-F-FF-1334, C-F-WF-1334, C-F-FF-1334 FF, C-F-WF-1354, C-F-WF-1334 FF, C-F-DW-1334, C-MEP-PD-1545, C-F-P-LSF-602 FF | 129d | 23d | 13,120.28 | GEN |

Notes:
- C-MEP-E-1986: Expenses: 1 55235.7
- C-MEP-E-2036: Expenses: 1 21017.5
- C-MEP-E-1996: Expenses: 1 57962.7; 2 132566
- C-MEP-E-2006: Expenses: 1 78921.1
- C-MEP-E-2026: Expenses: 1 71857.7
- C-MEP-AC-2648: Expenses: 1 140612
- C-MEP-AC-2668: Expenses: 1 30741.9
- C-MEP-AC-2708: Expenses: 1 51855.8
- C-MEP-AC-2688: Expenses: 1 8821.1
- C-MEP-AC-2678: Expenses: 1 2889.38
- C-MEP-AC-2658: Expenses: 1 28274.5
- C-MEP-AC-2718: Expenses: 1 55880.9
- C-MEP-FF-1324: Expenses: 1 45406.9
- C-MEP-FF-1344: Expenses: 1 5280.67
- C-MEP-FF-1334: Expenses: 1 18427.3
- C-MEP-FF-1354: Expenses: 1 64097.4
- C-MEP-PD-1655: Expenses: 1 83874.1
- C-MEP-PD-1665: Expenses: 1 30204.4
- C-MEP-PD-1675: Expenses: 1 9573.63
- C-MEP-PD-1685: Expenses: 1 1651.42
- C-MEP-PD-1695: Expenses: 1 13120.3

| ID | WBS | Activity | Duration | Start | Finish | Predecessors | Total float | Free float | Cost | AREA |
| --- | --- | --- | --- | --- | --- | --- | --- | --- | --- | --- |
|  | 7 | **ELV systems** |  | 2015-12-10 | 2016-08-06 |  |  |  |  |  |
|  | 1 | **Room Management System** |  | 2015-12-10 | 2016-05-22 |  |  |  |  |  |
| C-ELV-RMS-1655 |  | Installation of RMS first fix (Conduits, Boxes within block work , Gypsum Boards & Raised FLooring at level 30 | 20d | 2015-12-10 | 2016-01-03 | C-F-P-1003, C-F-P-993, SD-CS-L30-1012, C-ELV-RMS-1455 SS | 68d | 14d | 11,902.78 | GEN |
| C-ELV-RMS-1695 |  | Installation of Cable Trays & Truncking at level 30 | 25d | 2015-12-23 | 2016-01-20 | C-ELV-CS-1695 SS+5d | 69d | 0d | 2,769.38 |  |
| C-ELV-RMS-1665 |  | Installation of second fix (Cabling & Wirring etc..) at level 30 | 25d | 2016-01-21 | 2016-02-20 | C-ELV-RMS-1655, C-ELV-RMS-1695 | 75d | 0d | 11,902.78 | GEN |
| C-ELV-RMS-1675 |  | Installation & Connection of ethernets & HVAC thermostates etc.. at level 30 | 25d | 2016-02-21 | 2016-03-20 | C-ELV-RMS-1665 | 75d | 8d | 27,773.16 | GEN |
| C-ELV-RMS-1685 |  | Installtion & Connection of Panels, Controller, switches, server etc..) at level 30 | 20d | 2016-04-30 | 2016-05-22 | C-ELV-RMS-1675, C-ELV-RMS-1485 SS | 175d | 0d | 27,773.16 |  |
|  | 12 | **Fire Alarm & Detection System** |  | 2015-12-30 | 2016-06-13 |  |  |  |  |  |
| C-ELV-FA-1655 |  | Installation of FA first Fix Conduits, Boxes within block work , Gypsum Boards & Raised FLooring at level 30 | 20d | 2015-12-30 | 2016-01-21 | C-F-P-1003, C-F-P-993, C-ELV-FA-1455 SS | 72d | 0d | 13,660.92 | GEN |
| C-ELV-FA-1695 |  | Installation of Cable Trays & Truncking at level 30 | 25d | 2016-01-04 | 2016-02-01 | C-ELV-MSPA-1695 SS+5d, SD-CS-L30-1052 | 69d | 0d | 2,769.38 |  |
| C-ELV-FA-1665 |  | Installation of second fix (Cabling & Wirring etc..) at level 30 | 20d | 2016-02-02 | 2016-02-25 | C-ELV-FA-1655, C-ELV-FA-1695 | 70d | 0d | 22,768.2 | GEN |
| C-ELV-FA-1675 |  | Installation & Connection of heat detector, smoke detector, flame detector etc.. at level 30 | 25d | 2016-02-27 | 2016-03-26 | C-ELV-FA-1665 | 70d | 3d | 27,321.84 | GEN |
| C-ELV-FA-1685 |  | Installtion & Connection of Racks & Panels at level 30 | 20d | 2016-05-22 | 2016-06-13 | C-ELV-FA-1675, C-ELV-FA-1485 | 156d | 0d | 27,321.84 |  |
|  | 2 | **Music System & Public Address System** |  | 2015-12-29 | 2016-05-15 |  |  |  |  |  |
| C-ELV-MSPA-1695 |  | Installation of Cable Trays & Truncking at level 30 | 25d | 2015-12-29 | 2016-01-26 | C-ELV-RMS-1695 SS+5d | 69d | 0d | 2,769.38 |  |
| C-ELV-MSPA-1655 |  | Installation of MS/PA first fix (Conduits, Boxes within block work, Gypsum Boards & Raised FLooring at level 30 | 20d | 2016-01-07 | 2016-01-30 | C-F-P-1003, C-F-P-993, SD-CS-L30-1032, C-ELV-MSPA-1455 SS | 65d | 0d | 6,994.34 | GEN |
| C-ELV-MSPA-1665 |  | Installation of second fix (Cabling & Wirring etc..) at level 30 | 25d | 2016-01-31 | 2016-02-29 | C-ELV-MSPA-1655, C-ELV-MSPA-1695 | 67d | 0d | 6,994.34 | GEN |
| C-ELV-MSPA-1675 |  | Installation & Connection of speakers, Amplifier & Controller at level 30 | 25d | 2016-03-01 | 2016-03-29 | C-ELV-MSPA-1665 | 67d | 0d | 16,320.12 | GEN |
| C-ELV-MSPA-1685 |  | Installtion & Connection of Media hub, panels and processor at level 30 | 20d | 2016-04-23 | 2016-05-15 | C-ELV-MSPA-1675, C-ELV-MSPA-1485 SS | 181d | 0d | 16,320.12 |  |
|  | 3 | **IP CCTV & Access Control System** |  | 2015-12-10 | 2016-06-05 |  |  |  |  |  |
| C-ELV-CCTV-1655 |  | Installation of CCTV first Fix Conduits, Boxes within block work, Gypsum Boards & Raised FLooring at level 30 | 20d | 2015-12-10 | 2016-01-03 | C-F-P-1003, C-F-P-993, SD-CS-L30-1072, C-ELV-CCTV-1455 SS | 80d | 0d | 8,161.35 | GEN |
| C-ELV-CCTV-1695 |  | Installation of Cable Trays & Truncking at level 30 | 25d | 2016-01-10 | 2016-02-07 | C-ELV-FA-1695 SS+5d | 69d | 0d | 2,769.38 |  |
| C-ELV-CCTV-1665 |  | Installation of second fix (Cabling & Wirring etc..) at level 30 | 20d | 2016-02-08 | 2016-03-02 | C-ELV-CCTV-1655, C-ELV-CCTV-1695 | 72d | 0d | 19,043.14 | GEN |
| C-ELV-CCTV-1675 |  | Installation & Connection of Camera's & Alarms at level 30 | 18d | 2016-03-03 | 2016-03-23 | C-ELV-CCTV-1665 | 72d | 5d | 183,698.91 | GEN |
| C-ELV-CCTV-1685 |  | Installtion & Connection of Racks, Panels etc... at level 30 | 25d | 2016-05-08 | 2016-06-05 | C-ELV-CCTV-1675 FF, C-ELV-CCTV-1485 SS | 123d | 0d | 7,322.52 |  |

Notes:
- C-ELV-RMS-1655: Expenses: 1 11902.8
- C-ELV-RMS-1695: Expenses: 1 2769.38
- C-ELV-RMS-1665: Expenses: 1 11902.8
- C-ELV-RMS-1675: Expenses: 1 27773.2
- C-ELV-RMS-1685: Expenses: 1 27773.2
- C-ELV-FA-1655: Expenses: 1 13660.9
- C-ELV-FA-1695: Expenses: 1 2769.38
- C-ELV-FA-1665: Expenses: 1 22768.2
- C-ELV-FA-1675: Expenses: 1 27321.8
- C-ELV-FA-1685: Expenses: 1 27321.8
- C-ELV-MSPA-1695: Expenses: 1 2769.38
- C-ELV-MSPA-1655: Expenses: 1 6994.34
- C-ELV-MSPA-1665: Expenses: 1 6994.34
- C-ELV-MSPA-1675: Expenses: 1 16320.1
- C-ELV-MSPA-1685: Expenses: 1 16320.1
- C-ELV-CCTV-1655: Expenses: 1 8161.35
- C-ELV-CCTV-1695: Expenses: 1 2769.38
- C-ELV-CCTV-1665: Expenses: 1 19043.1
- C-ELV-CCTV-1675: Expenses: 1 183699
- C-ELV-CCTV-1685: Expenses: 1 7322.52

| ID | WBS | Activity | Duration | Start | Finish | Predecessors | Total float | Free float | Cost | AREA |
| --- | --- | --- | --- | --- | --- | --- | --- | --- | --- | --- |
|  | 7 | **Communication System** |  | 2015-12-16 | 2016-08-06 |  |  |  |  |  |
| C-ELV-CS-1695 |  | Installation of Cable Trays & Truncking at level 30 | 18d | 2015-12-16 | 2016-01-06 | C-MEP-E-2036 SS, C-ELV-CS-1495 SS | 67d | 0d | 2,769.38 |  |
| C-ELV-CS-1655 |  | Installation of CS first fix (Conduits, Boxes within block work, Gypsum Boards & Raised FLooring at level 30 | 20d | 2015-12-30 | 2016-01-21 | C-F-P-1003, C-F-P-993, SD-CS-L30-992, C-ELV-CS-1455 SS | 72d | 0d | 27,356.12 | GEN |
| C-ELV-CS-1665 |  | Installation of second fix (Cabling & Wirring etc..) at level 30 | 25d | 2016-01-23 | 2016-02-21 | C-ELV-CS-1655, C-ELV-CS-1695 | 74d | 0d | 82,068.35 | GEN |
| C-ELV-CS-1675 |  | Installation & Connection of Wireless Access points & IP dect phone & RJ 45 at level 30 | 25d | 2016-02-22 | 2016-03-21 | C-ELV-CS-1665 | 74d | 7d | 93,342.54 | GEN |
| C-ELV-CS-1685 |  | Installtion & Connection of Controller & Instrumentation at level 30 | 20d | 2016-07-14 | 2016-08-06 | C-ELV-CS-1675, C-ELV-CS-1485 SS | 137d | 0d | 223,314.69 |  |
|  | 4 | **IP, SMATV & QAM Television System** |  | 2015-12-30 | 2016-05-08 |  |  |  |  |  |
| C-ELV-SMATV-1655 |  | Installation of SMATV first Fix Conduits, Boxes within block work , Gypsum Boards & Raised FLooring at level 30 | 20d | 2015-12-30 | 2016-01-21 | C-F-P-1003, C-F-P-993, SD-CS-L30-1092, C-ELV-SMATV-1455 SS | 83d | 0d | 4,452.18 | GEN |
| C-ELV-SMATV-1695 |  | Installation of Cable Trays & Truncking at level 30 | 25d | 2016-01-16 | 2016-02-14 | C-ELV-CCTV-1695 SS+5d | 69d | 0d | 2,769.38 |  |
| C-ELV-SMATV-1665 |  | Installation of second fix (Cabling & Wirring etc..) at level 30 | 16d | 2016-02-15 | 2016-03-03 | C-ELV-SMATV-1655, C-ELV-SMATV-1695 | 71d | 0d | 10,388.41 | GEN |
| C-ELV-SMATV-1675 |  | Installation & Connection of Outlets, switches and splitter at level 30 | 18d | 2016-03-05 | 2016-03-24 | C-ELV-SMATV-1665 | 71d | 4d | 6,537.45 | GEN |
| C-ELV-SMATV-1685 |  | Installtion & Connection of SMATV & QAM fiber & receiver at level 30 | 20d | 2016-04-16 | 2016-05-08 | C-ELV-SMATV-1675, C-ELV-SMATV-1485 SS | 167d | 0d | 2,419.21 |  |
|  | 5 | **BMS system** |  | 2015-12-10 | 2016-04-21 |  |  |  |  |  |
| C-MEP-BMS-1655 |  | Installation of BMS first Fix Conduits, Boxes within block work , Gypsum Boards & Raised FLooring at level 30 | 20d | 2015-12-10 | 2016-01-03 | C-F-P-1003, C-F-P-993, SD-CS-L30-972, C-MEP-BMS-1455 SS | 82d | 14d | 8,895.95 | GEN |
| C-MEP-BMS-1695 |  | Installation of Cable trays & Trunking at level 30 | 20d | 2016-01-21 | 2016-02-14 | C-ELV-SMATV-1695 SS+5d | 69d | 0d |  |  |
| C-MEP-BMS-1665 |  | Installation of BMS Cabling & Wirring at level 30 | 16d | 2016-02-15 | 2016-03-03 | C-MEP-BMS-1655, C-MEP-BMS-1695 | 69d | 0d | 11,861.27 | GEN |
| C-MEP-BMS-1675 |  | Installation & Connection of BMS Sensors, Relays, & Valves at level 30 | 20d | 2016-03-05 | 2016-03-27 | C-MEP-BMS-1665, C-MEP-PD-1685, C-MEP-PD-1675, C-MEP-FF-1334, C-MEP-AC-2708, C-MEP-AC-2688, C-MEP-AC-2698 | 69d | 2d | 14,826.58 | GEN |
| C-MEP-BMS-1685 |  | Installtion & Connection of BMS Racks, Panels etc... at level 30 | 20d | 2016-03-30 | 2016-04-21 | C-MEP-BMS-1675, C-MEP-BMS-1485 SS | 191d | 12d | 14,826.58 |  |
|  | 48 | **MEP - Level 31** |  | 2015-11-28 | 2016-10-26 |  |  |  |  |  |
|  | 1 | **Electrical** |  | 2015-12-14 | 2016-10-26 |  |  |  |  |  |
| C-MEP-E-1866 |  | Installation of first Electrical Fix Conduits, Boxes within block work & Gypsum Boards at level 31 | 20d | 2015-12-14 | 2016-01-06 | C-F-P-933, C-MEP-E-1806 | 77d | 14d | 55,235.7 | GEN |
| C-MEP-E-1916 |  | Installation of Cable Trays & Truncking at level 31 | 18d | 2016-01-03 | 2016-01-23 | C-MEP-FF-1244 SS+10d, C-MEP-PD-1555 SS+5d, C-MEP-E-1856 | 53d | 0d | 21,017.55 |  |
| C-MEP-E-1876 |  | Installation of Electrical Second Fix (Cabling & Wirring etc..). at level 31 | 18d | 2016-01-24 | 2016-02-14 | C-MEP-E-1866, C-MEP-E-1916, C-MEP-E-1816 | 67d | 0d | 190,528.33 | GEN |
| C-MEP-E-1886 |  | Installation & Connection of Electrical DB's, SMDB's at level 31 | 16d | 2016-02-15 | 2016-03-03 | C-MEP-E-1876, C-MEP-E-1826 SS, C-MEP-E-1406 SS | 71d | 27d | 78,921.15 | GEN |
| C-MEP-E-1906 |  | Installation & Connection of Lighting Fixtures & Sockets at level 31 | 14d | 2016-10-11 | 2016-10-26 | C-MEP-E-1876, C-F-CF-2207, C-F-CF-2197, C-F-WF-1254, C-F-WF-1264, C-MEP-E-1606, C-F-P-LSF-612 FF | 104d | 17d | 71,857.69 | GEN |

Notes:
- C-ELV-CS-1695: Expenses: 1 2769.38
- C-ELV-CS-1655: Expenses: 1 27356.1
- C-ELV-CS-1665: Expenses: 1 82068.4
- C-ELV-CS-1675: Expenses: 1 93342.5
- C-ELV-CS-1685: Expenses: 1 223315
- C-ELV-SMATV-1655: Expenses: 1 4452.18
- C-ELV-SMATV-1695: Expenses: 1 2769.38
- C-ELV-SMATV-1665: Expenses: 1 10388.4
- C-ELV-SMATV-1675: Expenses: 1 6537.45
- C-ELV-SMATV-1685: Expenses: 1 2419.21
- C-MEP-BMS-1655: Expenses: 1 8895.95
- C-MEP-BMS-1665: Expenses: 1 11861.3
- C-MEP-BMS-1675: Expenses: 1 14826.6
- C-MEP-BMS-1685: Expenses: 1 14826.6
- C-MEP-E-1866: Expenses: 1 55235.7
- C-MEP-E-1916: Expenses: 1 21017.5
- C-MEP-E-1876: Expenses: 1 57962.7; 2 132566
- C-MEP-E-1886: Expenses: 1 78921.1
- C-MEP-E-1906: Expenses: 1 71857.7

| ID | WBS | Activity | Duration | Start | Finish | Predecessors | Total float | Free float | Cost | AREA |
| --- | --- | --- | --- | --- | --- | --- | --- | --- | --- | --- |
|  | 2 | **HVAC** |  | 2015-11-28 | 2016-10-10 |  |  |  |  |  |
| C-MEP-AC-2488 |  | Installation of Ductwork, Insulation & Dampers at level 31 | 23d | 2015-11-28 | 2015-12-24 | C-F-P-933 SS, C-MEP-AC-2088, SD-CS-L31-792 | 44d | 0d | 140,612.08 | GEN |
| C-MEP-AC-2508 |  | Installation of Chilled Water Pipes & Valves at level 31 | 25d | 2015-12-09 | 2016-01-07 | C-MEP-AC-2488 SS+10d, C-MEP-AC-1948 | 104d | 0d | 30,741.92 | GEN |
| C-MEP-AC-2548 |  | Installation of HVAC equipments AHU's, FCU's, ERU's, VAV's, CAV's & Fans at level 31 | 25d | 2015-12-24 | 2016-01-21 | C-MEP-AC-2538 FF, C-MEP-AC-2528 FF, C-MEP-AC-2488 SS | 104d | 49d | 47,481.94 | GEN |
| C-MEP-AC-2538 |  | Pressure testing of Ductwork at level 31 | 8d | 2015-12-26 | 2016-01-03 | C-MEP-AC-2488, C-MEP-AC-1818 | 91d | 0d |  | GEN |
| C-MEP-AC-2498 |  | Installation of Silencers, Attenuators, Isolators & Detectors at level 31 | 12d | 2016-01-04 | 2016-01-17 | C-MEP-AC-2538 | 128d | 73d | 28,274.51 | GEN |
| C-MEP-AC-2528 |  | Pressure testing & Insulation of Chilled Water Pipes at level 31 | 12d | 2016-01-09 | 2016-01-21 | C-MEP-AC-2508 | 104d | 0d | 8,821.1 | GEN |
| C-MEP-AC-2518 |  | Installation of Chilled Water Pipes Control Devices & Isolator at level 31 | 8d | 2016-01-23 | 2016-01-31 | C-MEP-AC-2528 | 116d | 61d | 2,889.38 | GEN |
| C-MEP-AC-2558 |  | Installation of Grilles, Diffusers & Controller at level 31 | 12d | 2016-09-27 | 2016-10-10 | C-MEP-AC-2548, C-F-CF-2207, C-F-CF-2197, C-F-WF-1264 FF, C-F-CF-2197 FF, C-F-WF-1254 FF, C-MEP-AC-2158 | 96d | 19d | 55,880.87 | GEN |
|  | 3 | **Fire Fighting** |  | 2015-12-09 | 2016-06-26 |  |  |  |  |  |
| C-MEP-FF-1244 |  | Installation of FIre fighting Pipes at level 31 | 25d | 2015-12-09 | 2016-01-07 | C-MEP-AC-2488 SS+10d, SD-CS-L31-812 | 63d | 0d | 45,406.88 | GEN |
| C-MEP-FF-1264 |  | Pressure testing of fire fighting pipes at level 31 | 8d | 2016-01-09 | 2016-01-17 | C-MEP-FF-1244 | 88d | 0d | 5,280.67 | GEN |
| C-MEP-FF-1254 |  | Installation of fire Fighting Valves at level 31 | 20d | 2016-01-18 | 2016-02-09 | C-MEP-FF-1264 | 88d | 33d | 18,427.34 | GEN |
| C-MEP-FF-1274 |  | Installation of Fire Fighting Sprinklers & Fire hose Cabinets & Extinguishers at level 31 | 14d | 2016-06-11 | 2016-06-26 | C-MEP-FF-1254, C-F-CF-2197, C-F-CF-2187, C-MEP-FF-1264 | 132d | 0d | 64,097.37 | GEN |
|  | 4 | **Plumbing & Drainage** |  | 2015-12-28 | 2016-10-04 |  |  |  |  |  |
| C-MEP-PD-1555 |  | Installation of Water Pipes & Valves (Hot & Cold atc..) at level 31 | 20d | 2015-12-28 | 2016-01-19 | C-MEP-FF-1244 SS, C-F-P-943, SD-CS-L31-852 | 53d | 0d | 83,874.06 | GEN |
| C-MEP-PD-1565 |  | Installation drainage Pipes at level 31 | 25d | 2015-12-28 | 2016-01-25 | C-MEP-PD-1555 SS, C-MEP-PD-1665 SS | 93d | 0d | 30,204.4 | GEN |
| C-MEP-PD-1575 |  | Pressure testing & Insullation of water pipes at level 31 | 8d | 2016-01-20 | 2016-01-28 | C-MEP-PD-1555, C-MEP-PD-1675 SS | 96d | 1d | 9,573.63 | GEN |
| C-MEP-PD-1585 |  | Pressure testing of drainage pipes at level 31 | 8d | 2016-01-26 | 2016-02-03 | C-MEP-PD-1565 | 93d | 38d | 1,651.42 | GEN |
| C-MEP-PD-1595 |  | Installation of Outlets, Drains, Gullies, Cowls, & Clean out at level 31 | 20d | 2016-09-07 | 2016-10-04 | C-MEP-PD-1575, C-MEP-PD-1575 FF, C-F-FF-1254, C-F-WF-1254, C-F-FF-1254 FF, C-F-WF-1274, C-F-WF-1254 FF, C-F-DW-1254, C-MEP-PD-1295, C-F-P-LSF-612 FF | 127d | 17d | 13,120.28 | GEN |
|  | 7 | **ELV systems** |  | 2015-12-28 | 2016-08-06 |  |  |  |  |  |
|  | 1 | **Room Management System** |  | 2015-12-28 | 2016-05-22 |  |  |  |  |  |
| C-ELV-RMS-1555 |  | Installation of RMS first fix (Conduits, Boxes within block work , Gypsum Boards & Raised FLooring at level 31 | 20d | 2015-12-28 | 2016-01-19 | C-F-P-943, C-F-P-933, SD-CS-L31-1032, C-ELV-RMS-1655 SS | 54d | 0d | 11,902.78 | GEN |
| C-ELV-RMS-1595 |  | Installation of Cable Trays & Truncking at level 31 | 25d | 2016-01-09 | 2016-02-06 | C-ELV-CS-1595 SS+5d | 55d | 0d | 2,769.38 |  |
| C-ELV-RMS-1565 |  | Installation of second fix (Cabling & Wirring etc..) at level 31 | 25d | 2016-02-07 | 2016-03-07 | C-ELV-RMS-1555, C-ELV-RMS-1595 | 61d | 0d | 11,902.78 | GEN |
| C-ELV-RMS-1575 |  | Installation & Connection of ethernets & HVAC thermostates etc.. at level 31 | 25d | 2016-03-08 | 2016-04-05 | C-ELV-RMS-1565 | 61d | 6d | 27,773.16 | GEN |
| C-ELV-RMS-1585 |  | Installtion & Connection of Panels, Controller, switches, server etc..) at level 31 | 20d | 2016-04-30 | 2016-05-22 | C-ELV-RMS-1575, C-ELV-RMS-1685 SS | 175d | 0d | 27,773.16 |  |

Notes:
- C-MEP-AC-2488: Expenses: 1 140612
- C-MEP-AC-2508: Expenses: 1 30741.9
- C-MEP-AC-2548: Expenses: 1 47481.9
- C-MEP-AC-2498: Expenses: 1 28274.5
- C-MEP-AC-2528: Expenses: 1 8821.1
- C-MEP-AC-2518: Expenses: 1 2889.38
- C-MEP-AC-2558: Expenses: 1 55880.9
- C-MEP-FF-1244: Expenses: 1 45406.9
- C-MEP-FF-1264: Expenses: 1 5280.67
- C-MEP-FF-1254: Expenses: 1 18427.3
- C-MEP-FF-1274: Expenses: 1 64097.4
- C-MEP-PD-1555: Expenses: 1 83874.1
- C-MEP-PD-1565: Expenses: 1 30204.4
- C-MEP-PD-1575: Expenses: 1 9573.63
- C-MEP-PD-1585: Expenses: 1 1651.42
- C-MEP-PD-1595: Expenses: 1 13120.3
- C-ELV-RMS-1555: Expenses: 1 11902.8
- C-ELV-RMS-1595: Expenses: 1 2769.38
- C-ELV-RMS-1565: Expenses: 1 11902.8
- C-ELV-RMS-1575: Expenses: 1 27773.2
- C-ELV-RMS-1585: Expenses: 1 27773.2

| ID | WBS | Activity | Duration | Start | Finish | Predecessors | Total float | Free float | Cost | AREA |
| --- | --- | --- | --- | --- | --- | --- | --- | --- | --- | --- |
|  | 12 | **Fire Alarm & Detection System** |  | 2015-12-30 | 2016-06-13 |  |  |  |  |  |
| C-ELV-FA-1555 |  | Installation of FA first Fix Conduits, Boxes within block work , Gypsum Boards & Raised FLooring at level 31 | 20d | 2015-12-30 | 2016-01-21 | C-F-P-943, C-F-P-933, C-ELV-FA-1655 SS | 72d | 0d | 13,660.92 | GEN |
| C-ELV-FA-1595 |  | Installation of Cable Trays & Truncking at level 31 | 25d | 2016-01-20 | 2016-02-18 | C-ELV-MSPA-1595 SS+5d, SD-CS-L31-1072 | 55d | 0d | 2,769.38 |  |
| C-ELV-FA-1565 |  | Installation of second fix (Cabling & Wirring etc..) at level 31 | 20d | 2016-02-20 | 2016-03-13 | C-ELV-FA-1555, C-ELV-FA-1595 | 56d | 0d | 22,768.2 | GEN |
| C-ELV-FA-1575 |  | Installation & Connection of heat detector, smoke detector, flame detector etc.. at level 31 | 25d | 2016-03-14 | 2016-04-11 | C-ELV-FA-1565 | 56d | 1d | 27,321.84 | GEN |
| C-ELV-FA-1585 |  | Installtion & Connection of Racks & Panels at level 31 | 20d | 2016-05-22 | 2016-06-13 | C-ELV-FA-1575, C-ELV-FA-1685 SS | 156d | 0d | 27,321.84 |  |
|  | 2 | **Music System & Public Address System** |  | 2016-01-07 | 2016-05-15 |  |  |  |  |  |
| C-ELV-MSPA-1555 |  | Installation of MS/PA first fix (Conduits, Boxes within block work, Gypsum Boards & Raised FLooring at level 31 | 20d | 2016-01-07 | 2016-01-30 | C-F-P-943, C-F-P-933, SD-CS-L31-1052, C-ELV-MSPA-1655 SS | 65d | 0d | 6,994.34 | GEN |
| C-ELV-MSPA-1595 |  | Installation of Cable Trays & Truncking at level 31 | 25d | 2016-01-14 | 2016-02-13 | C-ELV-RMS-1595 SS+5d | 55d | 0d | 2,769.38 |  |
| C-ELV-MSPA-1565 |  | Installation of second fix (Cabling & Wirring etc..) at level 31 | 25d | 2016-02-14 | 2016-03-13 | C-ELV-MSPA-1555, C-ELV-MSPA-1595 | 56d | 0d | 6,994.34 | GEN |
| C-ELV-MSPA-1575 |  | Installation & Connection of speakers, Amplifier & Controller at level 31 | 25d | 2016-03-14 | 2016-04-11 | C-ELV-MSPA-1565 | 56d | 1d | 16,320.12 | GEN |
| C-ELV-MSPA-1585 |  | Installtion & Connection of Media hub, panels and processor at level 31 | 20d | 2016-04-23 | 2016-05-15 | C-ELV-MSPA-1575, C-ELV-MSPA-1685 SS | 181d | 0d | 16,320.12 |  |
|  | 3 | **IP CCTV & Access Control System** |  | 2016-01-04 | 2016-06-05 |  |  |  |  |  |
| C-ELV-CCTV-1555 |  | Installation of CCTV first Fix Conduits, Boxes within block work, Gypsum Boards & Raised FLooring at level 31 | 20d | 2016-01-04 | 2016-01-26 | C-F-P-943, C-F-P-933, SD-CS-L31-1092, C-ELV-CCTV-1655 | 80d | 0d | 8,161.35 | GEN |
| C-ELV-CCTV-1595 |  | Installation of Cable Trays & Truncking at level 31 | 25d | 2016-01-26 | 2016-02-24 | C-ELV-FA-1595 SS+5d | 55d | 0d | 2,769.38 |  |
| C-ELV-CCTV-1565 |  | Installation of second fix (Cabling & Wirring etc..) at level 31 | 20d | 2016-02-25 | 2016-03-19 | C-ELV-CCTV-1555, C-ELV-CCTV-1595 | 58d | 0d | 19,043.14 | GEN |
| C-ELV-CCTV-1575 |  | Installation & Connection of Camera's & Alarms at level 31 | 18d | 2016-03-20 | 2016-04-09 | C-ELV-CCTV-1565 | 58d | 3d | 183,698.91 | GEN |
| C-ELV-CCTV-1585 |  | Installtion & Connection of Racks, Panels etc... at level 31 | 25d | 2016-05-08 | 2016-06-05 | C-ELV-CCTV-1575 FF, C-ELV-CCTV-1685 SS | 123d | 0d | 7,322.52 |  |
|  | 7 | **Communication System** |  | 2015-12-30 | 2016-08-06 |  |  |  |  |  |
| C-ELV-CS-1555 |  | Installation of CS first fix (Conduits, Boxes within block work, Gypsum Boards & Raised FLooring at level 31 | 20d | 2015-12-30 | 2016-01-21 | C-F-P-943, C-F-P-933, SD-CS-L31-1012, C-ELV-CS-1655 SS | 72d | 0d | 27,356.12 | GEN |
| C-ELV-CS-1595 |  | Installation of Cable Trays & Truncking at level 31 | 18d | 2016-01-03 | 2016-01-23 | C-MEP-E-1916 SS, C-ELV-CS-1695 SS | 53d | 0d | 2,769.38 |  |
| C-ELV-CS-1565 |  | Installation of second fix (Cabling & Wirring etc..) at level 31 | 25d | 2016-01-24 | 2016-02-22 | C-ELV-CS-1555, C-ELV-CS-1595 | 73d | 0d | 82,068.35 | GEN |
| C-ELV-CS-1575 |  | Installation & Connection of Wireless Access points & IP dect phone & RJ 45 at level 31 | 25d | 2016-02-23 | 2016-03-22 | C-ELV-CS-1565 | 73d | 18d | 93,342.54 | GEN |
| C-ELV-CS-1585 |  | Installtion & Connection of Controller & Instrumentation at level 31 | 20d | 2016-07-14 | 2016-08-06 | C-ELV-CS-1575, C-ELV-CS-1685 SS | 137d | 0d | 223,314.69 |  |

Notes:
- C-ELV-FA-1555: Expenses: 1 13660.9
- C-ELV-FA-1595: Expenses: 1 2769.38
- C-ELV-FA-1565: Expenses: 1 22768.2
- C-ELV-FA-1575: Expenses: 1 27321.8
- C-ELV-FA-1585: Expenses: 1 27321.8
- C-ELV-MSPA-1555: Expenses: 1 6994.34
- C-ELV-MSPA-1595: Expenses: 1 2769.38
- C-ELV-MSPA-1565: Expenses: 1 6994.34
- C-ELV-MSPA-1575: Expenses: 1 16320.1
- C-ELV-MSPA-1585: Expenses: 1 16320.1
- C-ELV-CCTV-1555: Expenses: 1 8161.35
- C-ELV-CCTV-1595: Expenses: 1 2769.38
- C-ELV-CCTV-1565: Expenses: 1 19043.1
- C-ELV-CCTV-1575: Expenses: 1 183699
- C-ELV-CCTV-1585: Expenses: 1 7322.52
- C-ELV-CS-1555: Expenses: 1 27356.1
- C-ELV-CS-1595: Expenses: 1 2769.38
- C-ELV-CS-1565: Expenses: 1 82068.4
- C-ELV-CS-1575: Expenses: 1 93342.5
- C-ELV-CS-1585: Expenses: 1 223315

| ID | WBS | Activity | Duration | Start | Finish | Predecessors | Total float | Free float | Cost | AREA |
| --- | --- | --- | --- | --- | --- | --- | --- | --- | --- | --- |
|  | 4 | **IP, SMATV & QAM Television System** |  | 2015-12-30 | 2016-05-08 |  |  |  |  |  |
| C-ELV-SMATV-1555 |  | Installation of SMATV first Fix Conduits, Boxes within block work , Gypsum Boards & Raised FLooring at level 31 | 20d | 2015-12-30 | 2016-01-21 | C-F-P-943, C-F-P-933, SD-CS-L31-1112, C-ELV-SMATV-1655 SS | 83d | 0d | 4,452.18 | GEN |
| C-ELV-SMATV-1595 |  | Installation of Cable Trays & Truncking at level 31 | 25d | 2016-02-01 | 2016-03-01 | C-ELV-CCTV-1595 SS+5d | 55d | 0d | 2,769.38 |  |
| C-ELV-SMATV-1565 |  | Installation of second fix (Cabling & Wirring etc..) at level 31 | 16d | 2016-03-02 | 2016-03-20 | C-ELV-SMATV-1555, C-ELV-SMATV-1595 | 57d | 0d | 10,388.41 | GEN |
| C-ELV-SMATV-1575 |  | Installation & Connection of Outlets, switches and splitter at level 31 | 18d | 2016-03-21 | 2016-04-10 | C-ELV-SMATV-1565 | 57d | 2d | 6,537.45 | GEN |
| C-ELV-SMATV-1585 |  | Installtion & Connection of SMATV & QAM fiber & receiver at level 31 | 20d | 2016-04-16 | 2016-05-08 | C-ELV-SMATV-1575, C-ELV-SMATV-1685 SS | 167d | 0d | 2,419.21 |  |
|  | 5 | **BMS system** |  | 2015-12-28 | 2016-05-05 |  |  |  |  |  |
| C-MEP-BMS-1555 |  | Installation of BMS first Fix Conduits, Boxes within block work , Gypsum Boards & Raised FLooring at level 31 | 20d | 2015-12-28 | 2016-01-19 | C-F-P-943, C-F-P-933, SD-CS-L31-992, C-MEP-BMS-1655 SS | 68d | 0d | 8,895.95 | GEN |
| C-MEP-BMS-1595 |  | Installation of Cable trays & Trunking at level 31 | 20d | 2016-02-07 | 2016-03-01 | C-ELV-SMATV-1595 SS+5d | 55d | 0d |  |  |
| C-MEP-BMS-1565 |  | Installation of BMS Cabling & Wirring at level 31 | 16d | 2016-03-02 | 2016-03-20 | C-MEP-BMS-1555, C-MEP-BMS-1595 | 55d | 0d | 11,861.27 | GEN |
| C-MEP-BMS-1575 |  | Installation & Connection of BMS Sensors, Relays, & Valves at level 31 | 20d | 2016-03-21 | 2016-04-12 | C-MEP-BMS-1565, C-MEP-PD-1585, C-MEP-PD-1575, C-MEP-FF-1254, C-MEP-AC-2548, C-MEP-AC-2528, C-MEP-AC-2538 | 55d | 0d | 14,826.58 | GEN |
| C-MEP-BMS-1585 |  | Installtion & Connection of BMS Racks, Panels etc... at level 31 | 20d | 2016-04-13 | 2016-05-05 | C-MEP-BMS-1575, C-MEP-BMS-1685 SS | 179d | 1d | 14,826.58 |  |
|  | 47 | **MEP - Level 32** |  | 2015-11-29 | 2016-10-27 |  |  |  |  |  |
|  | 1 | **Electrical** |  | 2015-12-15 | 2016-10-27 |  |  |  |  |  |
| C-MEP-E-1926 |  | Installation of first Electrical Fix Conduits, Boxes within block work & Gypsum Boards at level 32 | 20d | 2015-12-15 | 2016-01-07 | C-F-P-963, C-MEP-E-1506 | 76d | 14d | 55,235.7 | GEN |
| C-MEP-E-1976 |  | Installation of Cable Trays & Truncking at level 32 | 18d | 2016-01-04 | 2016-01-24 | C-MEP-FF-1284 SS+10d, C-MEP-PD-1605 SS+5d, C-MEP-E-1556 | 52d | 0d | 21,017.55 |  |
| C-MEP-E-1936 |  | Installation of Electrical Second Fix (Cabling & Wirring etc..). at level 32 | 18d | 2016-01-25 | 2016-02-15 | C-MEP-E-1926, C-MEP-E-1976, C-MEP-E-1516 | 66d | 0d | 190,528.33 | GEN |
| C-MEP-E-1946 |  | Installation & Connection of Electrical DB's, SMDB's at level 32 | 16d | 2016-02-16 | 2016-03-05 | C-MEP-E-1936, C-MEP-E-1526 SS, C-MEP-E-1646 SS | 86d | 22d | 78,921.15 | GEN |
| C-MEP-E-1966 |  | Installation & Connection of Lighting Fixtures & Sockets at level 32 | 14d | 2016-10-12 | 2016-10-27 | C-MEP-E-1936, C-F-CF-2277, C-F-CF-2267, C-F-WF-1294, C-F-WF-1304, C-MEP-E-1726, C-F-P-LSF-622 FF | 113d | 22d | 71,857.69 | GEN |
|  | 2 | **HVAC** |  | 2015-11-29 | 2016-10-11 |  |  |  |  |  |
| C-MEP-AC-2568 |  | Installation of Ductwork, Insulation & Dampers at level 32 | 23d | 2015-11-29 | 2015-12-26 | C-F-P-963 SS, C-MEP-AC-2248, SD-CS-L32-812 | 62d | 0d | 140,612.08 | GEN |
| C-MEP-AC-2588 |  | Installation of Chilled Water Pipes & Valves at level 32 | 25d | 2015-12-10 | 2016-01-09 | C-MEP-AC-2568 SS+10d, C-MEP-AC-2428 | 112d | 0d | 30,741.92 | GEN |
| C-MEP-AC-2628 |  | Installation of HVAC equipments AHU's, FCU's, ERU's, VAV's, CAV's & Fans at level 32 | 25d | 2015-12-26 | 2016-01-23 | C-MEP-AC-2618 FF, C-MEP-AC-2608 FF, C-MEP-AC-2568 SS | 112d | 49d | 242,308.56 | GEN |
| C-MEP-AC-2618 |  | Pressure testing of Ductwork at level 32 | 8d | 2016-01-04 | 2016-01-12 | C-MEP-AC-2568, C-MEP-AC-2538 | 91d | 0d |  | GEN |
| C-MEP-AC-2608 |  | Pressure testing & Insulation of Chilled Water Pipes at level 32 | 12d | 2016-01-10 | 2016-01-23 | C-MEP-AC-2588 | 112d | 0d | 8,821.1 | GEN |
| C-MEP-AC-2578 |  | Installation of Silencers, Attenuators, Isolators & Detectors at level 32 | 12d | 2016-01-13 | 2016-01-26 | C-MEP-AC-2618 | 129d | 66d | 28,274.51 | GEN |
| C-MEP-AC-2598 |  | Installation of Chilled Water Pipes Control Devices & Isolator at level 32 | 8d | 2016-01-24 | 2016-02-01 | C-MEP-AC-2608 | 124d | 61d | 2,889.38 | GEN |
| C-MEP-AC-2638 |  | Installation of Grilles, Diffusers & Controller at level 32 | 12d | 2016-09-28 | 2016-10-11 | C-MEP-AC-2628, C-F-CF-2277, C-F-CF-2267, C-F-WF-1304 FF, C-F-CF-2267 FF, C-F-WF-1294 FF, C-MEP-AC-2318 | 95d | 24d | 55,880.87 | GEN |

Notes:
- C-ELV-SMATV-1555: Expenses: 1 4452.18
- C-ELV-SMATV-1595: Expenses: 1 2769.38
- C-ELV-SMATV-1565: Expenses: 1 10388.4
- C-ELV-SMATV-1575: Expenses: 1 6537.45
- C-ELV-SMATV-1585: Expenses: 1 2419.21
- C-MEP-BMS-1555: Expenses: 1 8895.95
- C-MEP-BMS-1565: Expenses: 1 11861.3
- C-MEP-BMS-1575: Expenses: 1 14826.6
- C-MEP-BMS-1585: Expenses: 1 14826.6
- C-MEP-E-1926: Expenses: 1 55235.7
- C-MEP-E-1976: Expenses: 1 21017.5
- C-MEP-E-1936: Expenses: 1 57962.7; 2 132566
- C-MEP-E-1946: Expenses: 1 78921.1
- C-MEP-E-1966: Expenses: 1 71857.7
- C-MEP-AC-2568: Expenses: 1 140612
- C-MEP-AC-2588: Expenses: 1 30741.9
- C-MEP-AC-2628: Expenses: 1 242309
- C-MEP-AC-2608: Expenses: 1 8821.1
- C-MEP-AC-2578: Expenses: 1 28274.5
- C-MEP-AC-2598: Expenses: 1 2889.38
- C-MEP-AC-2638: Expenses: 1 55880.9

| ID | WBS | Activity | Duration | Start | Finish | Predecessors | Total float | Free float | Calendar | Cost | AREA |
| --- | --- | --- | --- | --- | --- | --- | --- | --- | --- | --- | --- |
|  | 3 | **Fire Fighting** |  | 2015-12-10 | 2016-06-27 |  |  |  |  |  |  |
| C-MEP-FF-1284 |  | Installation of FIre fighting Pipes at level 32 | 25d | 2015-12-10 | 2016-01-09 | C-MEP-AC-2568 SS+10d, SD-CS-L32-832 | 62d | 0d |  | 45,406.88 | GEN |
| C-MEP-FF-1304 |  | Pressure testing of fire fighting pipes at level 32 | 8d | 2016-01-10 | 2016-01-18 | C-MEP-FF-1284 | 96d | 0d |  | 5,280.67 | GEN |
| C-MEP-FF-1294 |  | Installation of fire Fighting Valves at level 32 | 20d | 2016-01-19 | 2016-02-11 | C-MEP-FF-1304 | 96d | 33d |  | 18,427.34 | GEN |
| C-MEP-FF-1314 |  | Installation of Fire Fighting Sprinklers & Fire hose Cabinets & Extinguishers at level 32 | 14d | 2016-06-12 | 2016-06-27 | C-MEP-FF-1294, C-F-CF-2267, C-F-CF-2257, C-MEP-FF-1304 | 131d | 0d |  | 64,097.37 | GEN |
|  | 4 | **Plumbing & Drainage** |  | 2015-11-29 | 2016-10-05 |  |  |  |  |  |  |
| C-MEP-PD-2905 |  | Installation of swimming pool GRP Water Tanks at level 32 | 25d | 2015-11-29 | 2015-12-28 | P-MEP-P-2403, C-CS-L32-111 | 85d | 0d | *APB - 6 D week + Qatar Holiday | 136,682.58 |  |
| C-MEP-PD-1605 |  | Installation of Water Pipes & Valves (Hot & Cold atc..) at level 32 | 20d | 2015-12-29 | 2016-01-20 | C-MEP-FF-1284 SS, C-F-P-973, SD-CS-L32-872 | 52d | 0d |  | 83,874.06 | GEN |
| C-MEP-PD-1615 |  | Installation drainage Pipes at level 32 | 25d | 2015-12-29 | 2016-01-26 | C-MEP-PD-1605 SS | 101d | 0d |  | 30,204.4 | GEN |
| C-MEP-PD-2955 |  | Installation & connection of swimming pool dosing pump at level 32 | 25d | 2015-12-29 | 2016-01-26 | C-MEP-PD-2905, P-MEP-P-2883, C-CS-L32-111 | 250d | 182d |  | 87,476.85 |  |
| C-MEP-PD-1625 |  | Pressure testing & Insullation of water pipes at level 32 | 8d | 2016-01-21 | 2016-01-30 | C-MEP-PD-1605, C-MEP-PD-1575 SS | 95d | 6d |  | 9,573.63 | GEN |
| C-MEP-PD-1635 |  | Pressure testing of drainage pipes at level 32 | 8d | 2016-01-27 | 2016-02-04 | C-MEP-PD-1615 | 101d | 38d |  | 1,651.42 | GEN |
| C-MEP-PD-1645 |  | Installation of Outlets, Drains, Gullies, Cowls, & Clean out at level 32 | 20d | 2016-09-08 | 2016-10-05 | C-MEP-PD-1625, C-MEP-PD-1625 FF, C-F-FF-1294, C-F-WF-1294, C-F-FF-1294 FF, C-F-WF-1314, C-F-WF-1294 FF, C-F-DW-1294, C-MEP-PD-1345, C-F-P-LSF-622 FF | 126d | 30d |  | 13,120.28 | GEN |
|  | 7 | **ELV systems** |  | 2015-12-30 | 2016-08-06 |  |  |  |  |  |  |
|  | 1 | **Room Management System** |  | 2016-01-10 | 2016-05-22 |  |  |  |  |  |  |
| C-ELV-RMS-1645 |  | Installation of Cable Trays & Truncking at level 32 | 25d | 2016-01-10 | 2016-02-07 | C-ELV-CS-1645 SS+5d | 63d | 0d |  | 2,769.38 |  |
| C-ELV-RMS-1605 |  | Installation of RMS first fix (Conduits, Boxes within block work , Gypsum Boards & Raised FLooring at level 32 | 20d | 2016-01-20 | 2016-02-13 | C-F-P-973, C-F-P-963, SD-CS-L32-1052, C-ELV-RMS-1555 | 54d | 0d |  | 11,902.78 | GEN |
| C-ELV-RMS-1615 |  | Installation of second fix (Cabling & Wirring etc..) at level 32 | 25d | 2016-02-14 | 2016-03-13 | C-ELV-RMS-1605, C-ELV-RMS-1645 | 65d | 0d |  | 11,902.78 | GEN |
| C-ELV-RMS-1625 |  | Installation & Connection of ethernets & HVAC thermostates etc.. at level 32 | 25d | 2016-03-14 | 2016-04-11 | C-ELV-RMS-1615 | 65d | 2d |  | 27,773.16 | GEN |
| C-ELV-RMS-1635 |  | Installtion & Connection of Panels, Controller, switches, server etc..) at level 32 | 20d | 2016-04-30 | 2016-05-22 | C-ELV-RMS-1625, C-ELV-RMS-1585 SS | 175d | 0d |  | 27,773.16 |  |
|  | 12 | **Fire Alarm & Detection System** |  | 2015-12-30 | 2016-06-13 |  |  |  |  |  |  |
| C-ELV-FA-1605 |  | Installation of FA first Fix Conduits, Boxes within block work , Gypsum Boards & Raised FLooring at level 32 | 20d | 2015-12-30 | 2016-01-21 | C-F-P-973, C-F-P-963, C-ELV-FA-1555 SS | 72d | 5d |  | 13,660.92 | GEN |
| C-ELV-FA-1645 |  | Installation of Cable Trays & Truncking at level 32 | 25d | 2016-01-21 | 2016-02-20 | C-ELV-MSPA-1645 SS+5d, SD-CS-L32-1092 | 63d | 0d |  | 2,769.38 |  |
| C-ELV-FA-1615 |  | Installation of second fix (Cabling & Wirring etc..) at level 32 | 20d | 2016-02-21 | 2016-03-14 | C-ELV-FA-1605, C-ELV-FA-1645 | 64d | 0d |  | 22,768.2 | GEN |
| C-ELV-FA-1625 |  | Installation & Connection of heat detector, smoke detector, flame detector etc.. at level 32 | 25d | 2016-03-15 | 2016-04-12 | C-ELV-FA-1615 | 64d | 1d |  | 27,321.84 | GEN |
| C-ELV-FA-1635 |  | Installtion & Connection of Racks & Panels at level 32 | 20d | 2016-05-22 | 2016-06-13 | C-ELV-FA-1625, C-ELV-FA-1585 SS | 156d | 0d |  | 27,321.84 |  |

Notes:
- C-MEP-FF-1284: Expenses: 1 45406.9
- C-MEP-FF-1304: Expenses: 1 5280.67
- C-MEP-FF-1294: Expenses: 1 18427.3
- C-MEP-FF-1314: Expenses: 1 64097.4
- C-MEP-PD-2905: Expenses: 1 136683
- C-MEP-PD-1605: Expenses: 1 83874.1
- C-MEP-PD-1615: Expenses: 1 30204.4
- C-MEP-PD-2955: Expenses: 1 87476.9
- C-MEP-PD-1625: Expenses: 1 9573.63
- C-MEP-PD-1635: Expenses: 1 1651.42
- C-MEP-PD-1645: Expenses: 1 13120.3
- C-ELV-RMS-1645: Expenses: 1 2769.38
- C-ELV-RMS-1605: Expenses: 1 11902.8
- C-ELV-RMS-1615: Expenses: 1 11902.8
- C-ELV-RMS-1625: Expenses: 1 27773.2
- C-ELV-RMS-1635: Expenses: 1 27773.2
- C-ELV-FA-1605: Expenses: 1 13660.9
- C-ELV-FA-1645: Expenses: 1 2769.38
- C-ELV-FA-1615: Expenses: 1 22768.2
- C-ELV-FA-1625: Expenses: 1 27321.8
- C-ELV-FA-1635: Expenses: 1 27321.8

| ID | WBS | Activity | Duration | Start | Finish | Predecessors | Total float | Free float | Cost | AREA |
| --- | --- | --- | --- | --- | --- | --- | --- | --- | --- | --- |
|  | 2 | **Music System & Public Address System** |  | 2016-01-07 | 2016-05-15 |  |  |  |  |  |
| C-ELV-MSPA-1605 |  | Installation of MS/PA first fix (Conduits, Boxes within block work, Gypsum Boards & Raised FLooring at level 32 | 20d | 2016-01-07 | 2016-01-30 | C-F-P-973, C-F-P-963, SD-CS-L32-1072, C-ELV-MSPA-1555 SS | 65d | 0d | 6,994.34 | GEN |
| C-ELV-MSPA-1645 |  | Installation of Cable Trays & Truncking at level 32 | 25d | 2016-01-16 | 2016-02-14 | C-ELV-RMS-1645 SS+5d | 63d | 0d | 2,769.38 |  |
| C-ELV-MSPA-1615 |  | Installation of second fix (Cabling & Wirring etc..) at level 32 | 25d | 2016-02-15 | 2016-03-14 | C-ELV-MSPA-1605, C-ELV-MSPA-1645 | 64d | 0d | 6,994.34 | GEN |
| C-ELV-MSPA-1625 |  | Installation & Connection of speakers, Amplifier & Controller at level 32 | 25d | 2016-03-15 | 2016-04-12 | C-ELV-MSPA-1615 | 64d | 1d | 16,320.12 | GEN |
| C-ELV-MSPA-1635 |  | Installtion & Connection of Media hub, panels and processor at level 32 | 20d | 2016-04-23 | 2016-05-15 | C-ELV-MSPA-1625, C-ELV-MSPA-1585 SS | 181d | 0d | 16,320.12 |  |
|  | 3 | **IP CCTV & Access Control System** |  | 2016-01-04 | 2016-06-05 |  |  |  |  |  |
| C-ELV-CCTV-1605 |  | Installation of CCTV first Fix Conduits, Boxes within block work, Gypsum Boards & Raised FLooring at level 32 | 20d | 2016-01-04 | 2016-01-26 | C-F-P-973, C-F-P-963, SD-CS-L32-1112, C-ELV-CCTV-1555 SS | 80d | 1d | 8,161.35 | GEN |
| C-ELV-CCTV-1645 |  | Installation of Cable Trays & Truncking at level 32 | 25d | 2016-01-27 | 2016-02-25 | C-ELV-FA-1645 SS+5d | 63d | 0d | 2,769.38 |  |
| C-ELV-CCTV-1615 |  | Installation of second fix (Cabling & Wirring etc..) at level 32 | 20d | 2016-02-27 | 2016-03-20 | C-ELV-CCTV-1605, C-ELV-CCTV-1645 | 66d | 0d | 19,043.14 | GEN |
| C-ELV-CCTV-1625 |  | Installation & Connection of Camera's & Alarms at level 32 | 18d | 2016-03-21 | 2016-04-10 | C-ELV-CCTV-1615 | 66d | 3d | 183,698.91 | GEN |
| C-ELV-CCTV-1635 |  | Installtion & Connection of Racks, Panels etc... at level 32 | 25d | 2016-05-08 | 2016-06-05 | C-ELV-CCTV-1625 FF, C-ELV-CCTV-1585 SS | 123d | 0d | 7,322.52 |  |
|  | 7 | **Communication System** |  | 2015-12-30 | 2016-08-06 |  |  |  |  |  |
| C-ELV-CS-1605 |  | Installation of CS first fix (Conduits, Boxes within block work, Gypsum Boards & Raised FLooring at level 32 | 20d | 2015-12-30 | 2016-01-21 | C-F-P-973, C-F-P-963, SD-CS-L32-1032, C-ELV-CS-1555 SS | 72d | 2d | 27,356.12 | GEN |
| C-ELV-CS-1645 |  | Installation of Cable Trays & Truncking at level 32 | 18d | 2016-01-04 | 2016-01-24 | C-MEP-E-1976 SS, C-ELV-CS-1595 SS | 52d | 0d | 2,769.38 |  |
| C-ELV-CS-1615 |  | Installation of second fix (Cabling & Wirring etc..) at level 32 | 25d | 2016-01-25 | 2016-02-23 | C-ELV-CS-1605, C-ELV-CS-1645 | 81d | 0d | 82,068.35 | GEN |
| C-ELV-CS-1625 |  | Installation & Connection of Wireless Access points & IP dect phone & RJ 45 at level 32 | 25d | 2016-02-24 | 2016-03-23 | C-ELV-CS-1615 | 81d | 18d | 93,342.54 | GEN |
| C-ELV-CS-1635 |  | Installtion & Connection of Controller & Instrumentation at level 32 | 20d | 2016-07-14 | 2016-08-06 | C-ELV-CS-1625, C-ELV-CS-1585 SS | 137d | 0d | 223,314.69 |  |
|  | 4 | **IP, SMATV & QAM Television System** |  | 2015-12-30 | 2016-05-08 |  |  |  |  |  |
| C-ELV-SMATV-1605 |  | Installation of SMATV first Fix Conduits, Boxes within block work , Gypsum Boards & Raised FLooring at level 32 | 20d | 2015-12-30 | 2016-01-21 | C-F-P-973, C-F-P-963, SD-CS-L32-1132, C-ELV-SMATV-1555 SS | 83d | 5d | 4,452.18 | GEN |
| C-ELV-SMATV-1645 |  | Installation of Cable Trays & Truncking at level 32 | 25d | 2016-02-02 | 2016-03-02 | C-ELV-CCTV-1645 SS+5d | 63d | 0d | 2,769.38 |  |
| C-ELV-SMATV-1615 |  | Installation of second fix (Cabling & Wirring etc..) at level 32 | 16d | 2016-03-03 | 2016-03-21 | C-ELV-SMATV-1605, C-ELV-SMATV-1645 | 65d | 0d | 10,388.41 | GEN |
| C-ELV-SMATV-1625 |  | Installation & Connection of Outlets, switches and splitter at level 32 | 18d | 2016-03-22 | 2016-04-11 | C-ELV-SMATV-1615 | 65d | 2d | 6,537.45 | GEN |
| C-ELV-SMATV-1635 |  | Installtion & Connection of SMATV & QAM fiber & receiver at level 32 | 20d | 2016-04-16 | 2016-05-08 | C-ELV-SMATV-1625, C-ELV-SMATV-1585 SS | 167d | 3d | 2,419.21 |  |

Notes:
- C-ELV-MSPA-1605: Expenses: 1 6994.34
- C-ELV-MSPA-1645: Expenses: 1 2769.38
- C-ELV-MSPA-1615: Expenses: 1 6994.34
- C-ELV-MSPA-1625: Expenses: 1 16320.1
- C-ELV-MSPA-1635: Expenses: 1 16320.1
- C-ELV-CCTV-1605: Expenses: 1 8161.35
- C-ELV-CCTV-1645: Expenses: 1 2769.38
- C-ELV-CCTV-1615: Expenses: 1 19043.1
- C-ELV-CCTV-1625: Expenses: 1 183699
- C-ELV-CCTV-1635: Expenses: 1 7322.52
- C-ELV-CS-1605: Expenses: 1 27356.1
- C-ELV-CS-1645: Expenses: 1 2769.38
- C-ELV-CS-1615: Expenses: 1 82068.4
- C-ELV-CS-1625: Expenses: 1 93342.5
- C-ELV-CS-1635: Expenses: 1 223315
- C-ELV-SMATV-1605: Expenses: 1 4452.18
- C-ELV-SMATV-1645: Expenses: 1 2769.38
- C-ELV-SMATV-1615: Expenses: 1 10388.4
- C-ELV-SMATV-1625: Expenses: 1 6537.45
- C-ELV-SMATV-1635: Expenses: 1 2419.21

| ID | WBS | Activity | Duration | Start | Finish | Predecessors | Total float | Free float | Cost | AREA |
| --- | --- | --- | --- | --- | --- | --- | --- | --- | --- | --- |
|  | 5 | **BMS system** |  | 2016-01-20 | 2016-05-07 |  |  |  |  |  |
| C-MEP-BMS-1605 |  | Installation of BMS first Fix Conduits, Boxes within block work , Gypsum Boards & Raised FLooring at level 32 | 20d | 2016-01-20 | 2016-02-13 | C-F-P-973, C-F-P-963, SD-CS-L32-1012, C-MEP-BMS-1555 | 68d | 0d | 8,895.95 | GEN |
| C-MEP-BMS-1645 |  | Installation of Cable trays & Trunking at level 32 | 20d | 2016-02-08 | 2016-03-02 | C-ELV-SMATV-1645 SS+5d | 63d | 0d |  |  |
| C-MEP-BMS-1615 |  | Installation of BMS Cabling & Wirring at level 32 | 16d | 2016-03-03 | 2016-03-21 | C-MEP-BMS-1605, C-MEP-BMS-1645 | 63d | 0d | 11,861.27 | GEN |
| C-MEP-BMS-1625 |  | Installation & Connection of BMS Sensors, Relays, & Valves at level 32 | 20d | 2016-03-22 | 2016-04-13 | C-MEP-BMS-1615, C-MEP-PD-1635, C-MEP-PD-1625, C-MEP-FF-1294, C-MEP-AC-2628, C-MEP-AC-2608, C-MEP-AC-2618 | 63d | 0d | 14,826.58 | GEN |
| C-MEP-BMS-1635 |  | Installtion & Connection of BMS Racks, Panels etc... at level 32 | 20d | 2016-04-14 | 2016-05-07 | C-MEP-BMS-1625, C-MEP-BMS-1585 SS | 178d | 0d | 14,826.58 |  |
|  | 46 | **MEP - Level 33** |  | 2015-12-06 | 2016-11-27 |  |  |  |  |  |
|  | 1 | **Electrical** |  | 2015-12-23 | 2016-11-21 |  |  |  |  |  |
| C-MEP-E-2046 |  | Installation of first Electrical Fix Conduits, Boxes within block work & Gypsum Boards at level 33 | 20d | 2015-12-23 | 2016-01-14 | C-F-P-1023, C-MEP-E-1566 | 48d | 14d | 55,235.7 | GEN |
| C-MEP-E-2096 |  | Installation of Cable Trays & Truncking at level 33 | 18d | 2016-01-11 | 2016-01-31 | C-MEP-FF-1364 SS+10d, C-MEP-PD-1705 SS+5d, C-MEP-E-1616 | 34d | 0d | 21,017.55 |  |
| C-MEP-E-2056 |  | Installation of Electrical Second Fix (Cabling & Wirring etc..). at level 33 | 18d | 2016-02-01 | 2016-02-22 | C-MEP-E-2046, C-MEP-E-2096, C-MEP-E-1576 | 34d | 0d | 190,528.33 | GEN |
| C-MEP-E-2066 |  | Installation & Connection of Electrical DB's, SMDB's & MCC's at level 33 | 16d | 2016-02-23 | 2016-03-12 | C-MEP-E-2056, C-MEP-E-1586, C-MEP-E-1766 | 34d | 8d | 148,075.81 | GEN |
| C-MEP-E-2086 |  | Installation & Connection of Lighting Fixtures & Sockets at level 33 | 14d | 2016-11-06 | 2016-11-21 | C-MEP-E-2056, C-F-CF-2417, C-F-CF-2407, C-F-WF-1374, C-F-WF-1384, C-MEP-E-1426, C-F-P-LSF-632 FF | 92d | 15d | 71,857.69 | GEN |
|  | 2 | **HVAC** |  | 2015-12-06 | 2016-11-05 |  |  |  |  |  |
| C-MEP-AC-2728 |  | Installation of Ductwork, Insulation & Dampers at level 33 | 23d | 2015-12-06 | 2016-01-02 | C-F-P-1023 SS, C-MEP-AC-1848 SS, SD-CS-L33-832 | 44d | 0d | 140,612.08 | GEN |
| C-MEP-AC-2748 |  | Installation of Chilled Water Pipes & Valves at level 33 | 25d | 2015-12-17 | 2016-01-16 | C-MEP-AC-2728 SS+10d, C-MEP-AC-2028 | 95d | 0d | 30,741.92 | GEN |
| C-MEP-AC-2788 |  | Installation of HVAC equipments AHU's, FCU's, ERU's, VAV's, CAV's & Fans at level 33 | 25d | 2016-01-02 | 2016-01-30 | C-MEP-AC-2778 FF, C-MEP-AC-2768 FF, C-MEP-AC-2728 SS | 95d | 49d | 149,597.14 | GEN |
| C-MEP-AC-2778 |  | Pressure testing of Ductwork at level 33 | 8d | 2016-01-13 | 2016-01-21 | C-MEP-AC-2728, C-MEP-AC-2618 | 91d | 0d |  | GEN |
| C-MEP-AC-2768 |  | Pressure testing & Insulation of Chilled Water Pipes at level 33 | 12d | 2016-01-17 | 2016-01-30 | C-MEP-AC-2748 | 95d | 0d | 8,821.1 | GEN |
| C-MEP-AC-2738 |  | Installation of Silencers, Attenuators, Isolators & Detectors at level 33 | 12d | 2016-01-23 | 2016-02-04 | C-MEP-AC-2778 | 110d | 64d | 28,274.51 | GEN |
| C-MEP-AC-2758 |  | Installation of Chilled Water Pipes Control Devices & Isolator at level 33 | 8d | 2016-01-31 | 2016-02-08 | C-MEP-AC-2768 | 107d | 61d | 2,889.38 | GEN |
| C-MEP-AC-2798 |  | Installation of Grilles, Diffusers & Controller at level 33 | 12d | 2016-10-23 | 2016-11-05 | C-MEP-AC-2788, C-F-CF-2417, C-F-CF-2407, C-F-WF-1384 FF, C-F-CF-2407 FF, C-F-WF-1374 FF, C-MEP-AC-1918 | 74d | 17d | 55,880.87 | GEN |
|  | 3 | **Fire Fighting** |  | 2015-12-17 | 2016-07-04 |  |  |  |  |  |
| C-MEP-FF-1364 |  | Installation of FIre fighting Pipes at level 33 | 25d | 2015-12-17 | 2016-01-16 | C-MEP-AC-2728 SS+10d, SD-CS-L33-852 | 44d | 0d | 45,406.88 | GEN |
| C-MEP-FF-1384 |  | Pressure testing of fire fighting pipes at level 33 | 8d | 2016-01-17 | 2016-01-25 | C-MEP-FF-1364 | 79d | 0d | 5,280.67 | GEN |
| C-MEP-FF-1374 |  | Installation of fire Fighting Valves at level 33 | 20d | 2016-01-26 | 2016-02-18 | C-MEP-FF-1384 | 79d | 33d | 18,427.34 | GEN |
| C-MEP-FF-1394 |  | Installation of Fire Fighting Sprinklers & Fire hose Cabinets & Extinguishers at level 33 | 14d | 2016-06-19 | 2016-07-04 | C-MEP-FF-1374, C-F-CF-2407, C-F-CF-2397, C-MEP-FF-1384 | 125d | 0d | 64,097.37 | GEN |

Notes:
- C-MEP-BMS-1605: Expenses: 1 8895.95
- C-MEP-BMS-1615: Expenses: 1 11861.3
- C-MEP-BMS-1625: Expenses: 1 14826.6
- C-MEP-BMS-1635: Expenses: 1 14826.6
- C-MEP-E-2046: Expenses: 1 55235.7
- C-MEP-E-2096: Expenses: 1 21017.5
- C-MEP-E-2056: Expenses: 1 57962.7; 2 132566
- C-MEP-E-2066: Expenses: 1 78921.1; 2 69154.7
- C-MEP-E-2086: Expenses: 1 71857.7
- C-MEP-AC-2728: Expenses: 1 140612
- C-MEP-AC-2748: Expenses: 1 30741.9
- C-MEP-AC-2788: Expenses: 1 149597
- C-MEP-AC-2768: Expenses: 1 8821.1
- C-MEP-AC-2738: Expenses: 1 28274.5
- C-MEP-AC-2758: Expenses: 1 2889.38
- C-MEP-AC-2798: Expenses: 1 55880.9
- C-MEP-FF-1364: Expenses: 1 45406.9
- C-MEP-FF-1384: Expenses: 1 5280.67
- C-MEP-FF-1374: Expenses: 1 18427.3
- C-MEP-FF-1394: Expenses: 1 64097.4

| ID | WBS | Activity | Duration | Start | Finish | Predecessors | Total float | Free float | Cost | AREA |
| --- | --- | --- | --- | --- | --- | --- | --- | --- | --- | --- |
|  | 4 | **Plumbing & Drainage** |  | 2016-01-05 | 2016-10-30 |  |  |  |  |  |
| C-MEP-PD-1705 |  | Installation of Water Pipes & Valves (Hot & Cold atc..) at level 33 | 20d | 2016-01-05 | 2016-01-27 | C-MEP-FF-1364 SS, C-F-P-1033, SD-CS-L33-892 | 34d | 0d | 83,874.06 | GEN |
| C-MEP-PD-1715 |  | Installation drainage Pipes at level 33 | 25d | 2016-01-05 | 2016-02-02 | C-MEP-PD-1705 SS | 84d | 0d | 30,204.4 | GEN |
| C-MEP-PD-1725 |  | Pressure testing & Insullation of water pipes at level 33 | 8d | 2016-01-28 | 2016-02-06 | C-MEP-PD-1705, C-MEP-PD-1625 SS | 89d | 6d | 9,573.63 | GEN |
| C-MEP-PD-1735 |  | Pressure testing of drainage pipes at level 33 | 8d | 2016-02-03 | 2016-02-13 | C-MEP-PD-1715 | 84d | 38d | 1,651.42 | GEN |
| C-MEP-PD-1745 |  | Installation of Outlets, Drains, Gullies, Cowls, & Clean out at level 33 | 20d | 2016-10-08 | 2016-10-30 | C-MEP-PD-1725, C-MEP-PD-1725 FF, C-F-FF-1374, C-F-WF-1374, C-F-FF-1374 FF, C-F-WF-1394, C-F-WF-1374 FF, C-F-DW-1374, C-MEP-PD-1445, C-F-P-LSF-632 FF | 115d | 0d | 13,120.28 | GEN |
|  | 7 | **ELV systems** |  | 2016-01-05 | 2016-08-06 |  |  |  |  |  |
|  | 1 | **Room Management System** |  | 2016-01-17 | 2016-05-22 |  |  |  |  |  |
| C-ELV-RMS-1745 |  | Installation of Cable Trays & Truncking at level 33 | 25d | 2016-01-17 | 2016-02-15 | C-ELV-CS-1745 SS+5d | 46d | 0d | 2,769.38 |  |
| C-ELV-RMS-1705 |  | Installation of RMS first fix (Conduits, Boxes within block work , Gypsum Boards & Raised FLooring at level 33 | 20d | 2016-01-20 | 2016-02-13 | C-F-P-1033, C-F-P-1023, SD-CS-L33-1072, C-ELV-RMS-1605 SS | 54d | 0d | 11,902.78 | GEN |
| C-ELV-RMS-1715 |  | Installation of second fix (Cabling & Wirring etc..) at level 33 | 25d | 2016-02-16 | 2016-03-15 | C-ELV-RMS-1705, C-ELV-RMS-1745 | 52d | 0d | 11,902.78 | GEN |
| C-ELV-RMS-1725 |  | Installation & Connection of ethernets & HVAC thermostates etc.. at level 33 | 25d | 2016-03-16 | 2016-04-13 | C-ELV-RMS-1715 | 52d | 6d | 27,773.16 | GEN |
| C-ELV-RMS-1735 |  | Installtion & Connection of Panels, Controller, switches, server etc..) at level 33 | 20d | 2016-04-30 | 2016-05-22 | C-ELV-RMS-1725, C-ELV-RMS-1635 SS | 175d | 0d | 27,773.16 |  |
|  | 12 | **Fire Alarm & Detection System** |  | 2016-01-05 | 2016-06-13 |  |  |  |  |  |
| C-ELV-FA-1705 |  | Installation of FA first Fix Conduits, Boxes within block work , Gypsum Boards & Raised FLooring at level 33 | 20d | 2016-01-05 | 2016-01-27 | C-F-P-1033, C-F-P-1023, C-ELV-FA-1605 SS | 67d | 6d | 13,660.92 | GEN |
| C-ELV-FA-1745 |  | Installation of Cable Trays & Truncking at level 33 | 25d | 2016-01-28 | 2016-02-27 | C-ELV-MSPA-1745 SS+5d, SD-CS-L33-1112 | 46d | 0d | 2,769.38 |  |
| C-ELV-FA-1715 |  | Installation of second fix (Cabling & Wirring etc..) at level 33 | 20d | 2016-02-28 | 2016-03-21 | C-ELV-FA-1705, C-ELV-FA-1745 | 47d | 0d | 22,768.2 | GEN |
| C-ELV-FA-1725 |  | Installation & Connection of heat detector, smoke detector, flame detector etc.. at level 33 | 25d | 2016-03-22 | 2016-04-19 | C-ELV-FA-1715 | 47d | 1d | 27,321.84 | GEN |
| C-ELV-FA-1735 |  | Installtion & Connection of Racks & Panels at level 33 | 20d | 2016-05-22 | 2016-06-13 | C-ELV-FA-1725, C-ELV-FA-1635 SS | 156d | 0d | 27,321.84 |  |
|  | 2 | **Music System & Public Address System** |  | 2016-01-07 | 2016-05-15 |  |  |  |  |  |
| C-ELV-MSPA-1705 |  | Installation of MS/PA first fix (Conduits, Boxes within block work, Gypsum Boards & Raised FLooring at level 33 | 20d | 2016-01-07 | 2016-01-30 | C-F-P-1033, C-F-P-1023, SD-CS-L33-1092, C-ELV-MSPA-1605 SS | 65d | 4d | 6,994.34 | GEN |
| C-ELV-MSPA-1745 |  | Installation of Cable Trays & Truncking at level 33 | 25d | 2016-01-23 | 2016-02-21 | C-ELV-RMS-1745 SS+5d | 46d | 0d | 2,769.38 |  |
| C-ELV-MSPA-1715 |  | Installation of second fix (Cabling & Wirring etc..) at level 33 | 25d | 2016-02-22 | 2016-03-21 | C-ELV-MSPA-1705, C-ELV-MSPA-1745 | 47d | 0d | 6,994.34 | GEN |
| C-ELV-MSPA-1725 |  | Installation & Connection of speakers, Amplifier & Controller at level 33 | 25d | 2016-03-22 | 2016-04-19 | C-ELV-MSPA-1715 | 47d | 1d | 16,320.12 | GEN |
| C-ELV-MSPA-1735 |  | Installtion & Connection of Media hub, panels and processor at level 33 | 20d | 2016-04-23 | 2016-05-15 | C-ELV-MSPA-1725, C-ELV-MSPA-1635 SS | 181d | 4d | 16,320.12 |  |

Notes:
- C-MEP-PD-1705: Expenses: 1 83874.1
- C-MEP-PD-1715: Expenses: 1 30204.4
- C-MEP-PD-1725: Expenses: 1 9573.63
- C-MEP-PD-1735: Expenses: 1 1651.42
- C-MEP-PD-1745: Expenses: 1 13120.3
- C-ELV-RMS-1745: Expenses: 1 2769.38
- C-ELV-RMS-1705: Expenses: 1 11902.8
- C-ELV-RMS-1715: Expenses: 1 11902.8
- C-ELV-RMS-1725: Expenses: 1 27773.2
- C-ELV-RMS-1735: Expenses: 1 27773.2
- C-ELV-FA-1705: Expenses: 1 13660.9
- C-ELV-FA-1745: Expenses: 1 2769.38
- C-ELV-FA-1715: Expenses: 1 22768.2
- C-ELV-FA-1725: Expenses: 1 27321.8
- C-ELV-FA-1735: Expenses: 1 27321.8
- C-ELV-MSPA-1705: Expenses: 1 6994.34
- C-ELV-MSPA-1745: Expenses: 1 2769.38
- C-ELV-MSPA-1715: Expenses: 1 6994.34
- C-ELV-MSPA-1725: Expenses: 1 16320.1
- C-ELV-MSPA-1735: Expenses: 1 16320.1

| ID | WBS | Activity | Duration | Start | Finish | Predecessors | Total float | Free float | Cost | AREA |
| --- | --- | --- | --- | --- | --- | --- | --- | --- | --- | --- |
|  | 3 | **IP CCTV & Access Control System** |  | 2016-01-05 | 2016-07-04 |  |  |  |  |  |
| C-ELV-CCTV-1705 |  | Installation of CCTV first Fix Conduits, Boxes within block work, Gypsum Boards & Raised FLooring at level 33 | 20d | 2016-01-05 | 2016-01-27 | C-F-P-1033, C-F-P-1023, SD-CS-L33-1132, C-ELV-CCTV-1605 SS | 79d | 6d | 8,161.35 | GEN |
| C-ELV-CCTV-1745 |  | Installation of Cable Trays & Truncking at level 33 | 25d | 2016-02-03 | 2016-03-03 | C-ELV-FA-1745 SS+5d | 46d | 0d | 2,769.38 |  |
| C-ELV-CCTV-1715 |  | Installation of second fix (Cabling & Wirring etc..) at level 33 | 20d | 2016-03-05 | 2016-03-27 | C-ELV-CCTV-1705, C-ELV-CCTV-1745 | 49d | 0d | 19,043.14 | GEN |
| C-ELV-CCTV-1725 |  | Installation & Connection of Camera's & Alarms at level 33 | 18d | 2016-03-28 | 2016-04-17 | C-ELV-CCTV-1715 | 49d | 3d | 183,698.91 | GEN |
| C-ELV-CCTV-1735 |  | Installtion & Connection of Racks, Panels etc... at level 33 | 25d | 2016-06-06 | 2016-07-04 | C-ELV-CCTV-1725 FF, C-ELV-CCTV-1635 | 123d | 0d | 7,322.52 |  |
|  | 7 | **Communication System** |  | 2016-01-05 | 2016-08-06 |  |  |  |  |  |
| C-ELV-CS-1705 |  | Installation of CS first fix (Conduits, Boxes within block work, Gypsum Boards & Raised FLooring at level 33 | 20d | 2016-01-05 | 2016-01-27 | C-F-P-1033, C-F-P-1023, SD-CS-L33-1052, C-ELV-CS-1605 SS | 67d | 3d | 27,356.12 | GEN |
| C-ELV-CS-1745 |  | Installation of Cable Trays & Truncking at level 33 | 18d | 2016-01-11 | 2016-01-31 | C-MEP-E-2096 SS, C-ELV-CS-1645 SS | 46d | 0d | 2,769.38 |  |
| C-ELV-CS-1715 |  | Installation of second fix (Cabling & Wirring etc..) at level 33 | 25d | 2016-02-01 | 2016-03-01 | C-ELV-CS-1705, C-ELV-CS-1745 | 64d | 0d | 82,068.35 | GEN |
| C-ELV-CS-1725 |  | Installation & Connection of Wireless Access points & IP dect phone & RJ 45 at level 33 | 25d | 2016-03-02 | 2016-03-30 | C-ELV-CS-1715 | 64d | 18d | 93,342.54 | GEN |
| C-ELV-CS-1735 |  | Installtion & Connection of Controller & Instrumentation at level 33 | 20d | 2016-07-14 | 2016-08-06 | C-ELV-CS-1725, C-ELV-CS-1635 SS | 137d | 0d | 223,314.69 |  |
|  | 4 | **IP, SMATV & QAM Television System** |  | 2016-01-05 | 2016-05-11 |  |  |  |  |  |
| C-ELV-SMATV-1705 |  | Installation of SMATV first Fix Conduits, Boxes within block work , Gypsum Boards & Raised FLooring at level 33 | 20d | 2016-01-05 | 2016-01-27 | C-F-P-1033, C-F-P-1023, SD-CS-L33-1152, C-ELV-SMATV-1605 SS | 78d | 6d | 4,452.18 | GEN |
| C-ELV-SMATV-1745 |  | Installation of Cable Trays & Truncking at level 33 | 25d | 2016-02-09 | 2016-03-09 | C-ELV-CCTV-1745 SS+5d | 46d | 0d | 2,769.38 |  |
| C-ELV-SMATV-1715 |  | Installation of second fix (Cabling & Wirring etc..) at level 33 | 16d | 2016-03-10 | 2016-03-28 | C-ELV-SMATV-1705, C-ELV-SMATV-1745 | 48d | 0d | 10,388.41 | GEN |
| C-ELV-SMATV-1725 |  | Installation & Connection of Outlets, switches and splitter at level 33 | 18d | 2016-03-29 | 2016-04-18 | C-ELV-SMATV-1715 | 48d | 0d | 6,537.45 | GEN |
| C-ELV-SMATV-1735 |  | Installtion & Connection of SMATV & QAM fiber & receiver at level 33 | 20d | 2016-04-19 | 2016-05-11 | C-ELV-SMATV-1725, C-ELV-SMATV-1635 SS | 164d | 0d | 2,419.21 |  |
|  | 5 | **BMS system** |  | 2016-01-20 | 2016-05-30 |  |  |  |  |  |
| C-MEP-BMS-1705 |  | Installation of BMS first Fix Conduits, Boxes within block work , Gypsum Boards & Raised FLooring at level 33 | 20d | 2016-01-20 | 2016-02-13 | C-F-P-1033, C-F-P-1023, SD-CS-L33-1032, C-MEP-BMS-1605 SS | 68d | 0d | 8,895.95 | GEN |
| C-MEP-BMS-1745 |  | Installation of Cable trays & Trunking at level 33 | 20d | 2016-02-16 | 2016-03-09 | C-ELV-SMATV-1745 SS+5d | 46d | 0d |  |  |
| C-MEP-BMS-1715 |  | Installation of BMS Cabling & Wirring at level 33 | 16d | 2016-03-10 | 2016-03-28 | C-MEP-BMS-1705, C-MEP-BMS-1745 | 46d | 0d | 11,861.27 | GEN |
| C-MEP-BMS-1725 |  | Installation & Connection of BMS Sensors, Relays, & Valves at level 33 | 20d | 2016-03-29 | 2016-04-20 | C-MEP-BMS-1715, C-MEP-PD-1735, C-MEP-PD-1725, C-MEP-FF-1374, C-MEP-AC-2788, C-MEP-AC-2768, C-MEP-AC-2778 | 46d | 0d | 14,826.58 | GEN |
| C-MEP-BMS-1735 |  | Installtion & Connection of BMS Racks, Panels etc... at level 33 | 20d | 2016-05-08 | 2016-05-30 | C-MEP-BMS-1725, C-MEP-BMS-1635 | 178d | 0d | 14,826.58 |  |

Notes:
- C-ELV-CCTV-1705: Expenses: 1 8161.35
- C-ELV-CCTV-1745: Expenses: 1 2769.38
- C-ELV-CCTV-1715: Expenses: 1 19043.1
- C-ELV-CCTV-1725: Expenses: 1 183699
- C-ELV-CCTV-1735: Expenses: 1 7322.52
- C-ELV-CS-1705: Expenses: 1 27356.1
- C-ELV-CS-1745: Expenses: 1 2769.38
- C-ELV-CS-1715: Expenses: 1 82068.4
- C-ELV-CS-1725: Expenses: 1 93342.5
- C-ELV-CS-1735: Expenses: 1 223315
- C-ELV-SMATV-1705: Expenses: 1 4452.18
- C-ELV-SMATV-1745: Expenses: 1 2769.38
- C-ELV-SMATV-1715: Expenses: 1 10388.4
- C-ELV-SMATV-1725: Expenses: 1 6537.45
- C-ELV-SMATV-1735: Expenses: 1 2419.21
- C-MEP-BMS-1705: Expenses: 1 8895.95
- C-MEP-BMS-1715: Expenses: 1 11861.3
- C-MEP-BMS-1725: Expenses: 1 14826.6
- C-MEP-BMS-1735: Expenses: 1 14826.6

| ID | WBS | Activity | Duration | Start | Finish | Predecessors | Total float | Free float | Cost | AREA |
| --- | --- | --- | --- | --- | --- | --- | --- | --- | --- | --- |
|  | 6 | **Gas System** |  | 2016-10-12 | 2016-11-27 |  |  |  |  |  |
| C-MEP-Gas-2935 |  | Installation & testing of Gas Pipes & Supports at level 33 | 20d | 2016-10-12 | 2016-11-03 | C-MEP-PD-1735, C-MEP-PD-1725, C-MEP-FF-1384, C-MEP-Gas-2925 | 6d | 0d | 4,994.14 | GEN |
| C-MEP-Gas-2945 |  | Installation & testing of Gas Valves at level 33 | 20d | 2016-11-05 | 2016-11-27 | C-MEP-Gas-2935 | 6d | 0d | 3,329.43 |  |
|  | 45 | **MEP - Level 34** |  | 2015-12-13 | 2017-01-14 |  |  |  |  |  |
|  | 1 | **Electrical** |  | 2015-12-30 | 2016-11-28 |  |  |  |  |  |
| C-MEP-E-2166 |  | Installation of first Electrical Fix Conduits, Boxes within block work & Gypsum Boards at level 34 | 20d | 2015-12-30 | 2016-01-21 | C-F-P-1083, C-MEP-E-1686 | 72d | 14d | 55,235.7 | GEN |
| C-MEP-E-2216 |  | Installation of Cable Trays & Truncking at level 34 | 18d | 2016-01-18 | 2016-02-07 | C-MEP-FF-1444 SS+10d, C-MEP-PD-1805 SS+5d, C-MEP-E-1736 | 55d | 0d | 21,017.55 |  |
| C-MEP-E-2176 |  | Installation of Electrical Second Fix (Cabling & Wirring etc..). at level 34 | 18d | 2016-02-08 | 2016-02-29 | C-MEP-E-2166, C-MEP-E-2216, C-MEP-E-1696 | 58d | 0d | 190,528.33 | GEN |
| C-MEP-E-2186 |  | Installation & Connection of Electrical DB's, SMDB's & MCC's at level 34 | 16d | 2016-03-01 | 2016-03-19 | C-MEP-E-2176, C-MEP-E-1706, C-MEP-E-2006 | 58d | 8d | 130,784.83 | GEN |
| C-MEP-E-2206 |  | Installation & Connection of Lighting Fixtures & Sockets at level 34 | 14d | 2016-11-13 | 2016-11-28 | C-MEP-E-2176, C-F-CF-2557, C-F-CF-2547, C-F-WF-1454, C-F-WF-1464, C-MEP-E-1666, C-F-P-LSF-642 FF | 90d | 0d | 71,857.69 | GEN |
|  | 2 | **HVAC** |  | 2015-12-13 | 2016-10-25 |  |  |  |  |  |
| C-MEP-AC-2888 |  | Installation of Ductwork, Insulation & Dampers at level 34 | 23d | 2015-12-13 | 2016-01-09 | C-F-P-1083 SS, C-MEP-AC-2168, SD-CS-L34-852 | 59d | 0d | 140,612.08 | GEN |
| C-MEP-AC-2908 |  | Installation of Chilled Water Pipes & Valves at level 34 | 25d | 2015-12-26 | 2016-01-23 | C-MEP-AC-2888 SS+10d, C-MEP-AC-2108 | 99d | 0d | 30,741.92 | GEN |
| C-MEP-AC-2948 |  | Installation of HVAC equipments AHU's, FCU's, ERU's, VAV's, CAV's & Fans at level 34 | 25d | 2016-01-09 | 2016-02-06 | C-MEP-AC-2938 FF, C-MEP-AC-2928 FF, C-MEP-AC-2888 SS | 104d | 49d | 146,069.68 | GEN |
| C-MEP-AC-2938 |  | Pressure testing of Ductwork at level 34 | 8d | 2016-01-23 | 2016-01-31 | C-MEP-AC-2888, C-MEP-AC-2778 | 91d | 0d |  | GEN |
| C-MEP-AC-2928 |  | Pressure testing & Insulation of Chilled Water Pipes at level 34 | 12d | 2016-01-24 | 2016-02-06 | C-MEP-AC-2908 | 104d | 0d | 8,821.1 | GEN |
| C-MEP-AC-2898 |  | Installation of Silencers, Attenuators, Isolators & Detectors at level 34 | 12d | 2016-02-01 | 2016-02-15 | C-MEP-AC-2938 | 117d | 62d | 28,274.51 | GEN |
| C-MEP-AC-2918 |  | Installation of Chilled Water Pipes Control Devices & Isolator at level 34 | 8d | 2016-02-07 | 2016-02-16 | C-MEP-AC-2928 | 116d | 61d | 2,889.38 | GEN |
| C-MEP-AC-2958 |  | Installation of Grilles, Diffusers & Controller at level 34 | 12d | 2016-10-12 | 2016-10-25 | C-MEP-AC-2948, C-F-CF-2557, C-F-CF-2547, C-F-WF-1464 FF, C-F-CF-2547 FF, C-F-WF-1454 FF, C-MEP-AC-2238 | 95d | 1d | 55,880.87 | GEN |
|  | 3 | **Fire Fighting** |  | 2015-12-26 | 2016-07-14 |  |  |  |  |  |
| C-MEP-FF-1444 |  | Installation of FIre fighting Pipes at level 34 | 25d | 2015-12-26 | 2016-01-23 | C-MEP-AC-2888 SS+10d, SD-CS-L34-872 | 65d | 0d | 45,406.88 | GEN |
| C-MEP-FF-1464 |  | Pressure testing of fire fighting pipes at level 34 | 8d | 2016-01-24 | 2016-02-01 | C-MEP-FF-1444 | 88d | 0d | 5,280.67 | GEN |
| C-MEP-FF-1454 |  | Installation of fire Fighting Valves at level 34 | 20d | 2016-02-02 | 2016-02-25 | C-MEP-FF-1464 | 88d | 33d | 18,427.34 | GEN |
| C-MEP-FF-1474 |  | Installation of Fire Fighting Sprinklers & Fire hose Cabinets & Extinguishers at level 34 | 14d | 2016-06-26 | 2016-07-14 | C-MEP-FF-1454, C-F-CF-2547, C-F-CF-2537, C-MEP-FF-1464 | 119d | 0d | 64,097.37 | GEN |

Notes:
- C-MEP-Gas-2935: Expenses: 1 4994.14
- C-MEP-Gas-2945: Expenses: 1 3329.43
- C-MEP-E-2166: Expenses: 1 55235.7
- C-MEP-E-2216: Expenses: 1 21017.5
- C-MEP-E-2176: Expenses: 1 57962.7; 2 132566
- C-MEP-E-2186: Expenses: 1 78921.1; 2 51863.7
- C-MEP-E-2206: Expenses: 1 71857.7
- C-MEP-AC-2888: Expenses: 1 140612
- C-MEP-AC-2908: Expenses: 1 30741.9
- C-MEP-AC-2948: Expenses: 1 146070
- C-MEP-AC-2928: Expenses: 1 8821.1
- C-MEP-AC-2898: Expenses: 1 28274.5
- C-MEP-AC-2918: Expenses: 1 2889.38
- C-MEP-AC-2958: Expenses: 1 55880.9
- C-MEP-FF-1444: Expenses: 1 45406.9
- C-MEP-FF-1464: Expenses: 1 5280.67
- C-MEP-FF-1454: Expenses: 1 18427.3
- C-MEP-FF-1474: Expenses: 1 64097.4

| ID | WBS | Activity | Duration | Start | Finish | Predecessors | Total float | Free float | Cost | AREA |
| --- | --- | --- | --- | --- | --- | --- | --- | --- | --- | --- |
|  | 4 | **Plumbing & Drainage** |  | 2016-01-12 | 2016-10-19 |  |  |  |  |  |
| C-MEP-PD-1805 |  | Installation of Water Pipes & Valves (Hot & Cold atc..) at level 34 | 20d | 2016-01-12 | 2016-02-03 | C-MEP-FF-1444 SS, C-F-P-1093, SD-CS-L34-912 | 55d | 0d | 83,874.06 | GEN |
| C-MEP-PD-1815 |  | Installation drainage Pipes at level 34 | 25d | 2016-01-12 | 2016-02-09 | C-MEP-PD-1805 SS | 93d | 0d | 30,204.4 | GEN |
| C-MEP-PD-1825 |  | Pressure testing & Insullation of water pipes at level 34 | 8d | 2016-02-04 | 2016-02-14 | C-MEP-PD-1805, C-MEP-PD-1725 SS | 98d | 43d | 9,573.63 | GEN |
| C-MEP-PD-1835 |  | Pressure testing of drainage pipes at level 34 | 8d | 2016-02-11 | 2016-02-20 | C-MEP-PD-1815 | 93d | 38d | 1,651.42 | GEN |
| C-MEP-PD-1845 |  | Installation of Outlets, Drains, Gullies, Cowls, & Clean out at level 34 | 20d | 2016-09-27 | 2016-10-19 | C-MEP-PD-1825, C-MEP-PD-1825 FF, C-F-FF-1454, C-F-WF-1454, C-F-FF-1454 FF, C-F-WF-1474, C-F-WF-1454 FF, C-F-DW-1454, C-MEP-PD-1195, C-F-P-LSF-642 FF | 124d | 0d | 13,120.28 | GEN |
|  | 7 | **ELV systems** |  | 2016-01-12 | 2016-08-06 |  |  |  |  |  |
|  | 1 | **Room Management System** |  | 2016-01-20 | 2016-05-22 |  |  |  |  |  |
| C-ELV-RMS-1805 |  | Installation of RMS first fix (Conduits, Boxes within block work , Gypsum Boards & Raised FLooring at level 34 | 20d | 2016-01-20 | 2016-02-13 | C-F-P-1093, C-F-P-1083, SD-CS-L34-1092, C-ELV-RMS-1705 SS | 69d | 7d | 11,902.78 | GEN |
| C-ELV-RMS-1845 |  | Installation of Cable Trays & Truncking at level 34 | 25d | 2016-01-24 | 2016-02-22 | C-ELV-CS-1845 SS+5d | 55d | 0d | 2,769.38 |  |
| C-ELV-RMS-1815 |  | Installation of second fix (Cabling & Wirring etc..) at level 34 | 25d | 2016-02-23 | 2016-03-22 | C-ELV-RMS-1805, C-ELV-RMS-1845 | 61d | 0d | 11,902.78 | GEN |
| C-ELV-RMS-1825 |  | Installation & Connection of ethernets & HVAC thermostates etc.. at level 34 | 25d | 2016-03-23 | 2016-04-20 | C-ELV-RMS-1815 | 61d | 6d | 27,773.16 | GEN |
| C-ELV-RMS-1835 |  | Installtion & Connection of Panels, Controller, switches, server etc..) at level 34 | 20d | 2016-04-30 | 2016-05-22 | C-ELV-RMS-1825, C-ELV-RMS-1735 SS | 175d | 0d | 27,773.16 |  |
|  | 12 | **Fire Alarm & Detection System** |  | 2016-01-12 | 2016-06-13 |  |  |  |  |  |
| C-ELV-FA-1805 |  | Installation of FA first Fix Conduits, Boxes within block work , Gypsum Boards & Raised FLooring at level 34 | 20d | 2016-01-12 | 2016-02-03 | C-F-P-1093, C-F-P-1083, C-ELV-FA-1705 SS | 61d | 14d | 13,660.92 | GEN |
| C-ELV-FA-1845 |  | Installation of Cable Trays & Truncking at level 34 | 25d | 2016-02-04 | 2016-03-05 | C-ELV-MSPA-1845 SS+5d, SD-CS-L34-1132 | 55d | 0d | 2,769.38 |  |
| C-ELV-FA-1815 |  | Installation of second fix (Cabling & Wirring etc..) at level 34 | 20d | 2016-03-06 | 2016-03-28 | C-ELV-FA-1805, C-ELV-FA-1845 | 56d | 0d | 22,768.2 | GEN |
| C-ELV-FA-1825 |  | Installation & Connection of heat detector, smoke detector, flame detector etc.. at level 34 | 25d | 2016-03-29 | 2016-04-26 | C-ELV-FA-1815 | 56d | 1d | 27,321.84 | GEN |
| C-ELV-FA-1835 |  | Installtion & Connection of Racks & Panels at level 34 | 20d | 2016-05-22 | 2016-06-13 | C-ELV-FA-1825, C-ELV-FA-1735 SS | 156d | 0d | 27,321.84 |  |
|  | 2 | **Music System & Public Address System** |  | 2016-01-12 | 2016-05-19 |  |  |  |  |  |
| C-ELV-MSPA-1805 |  | Installation of MS/PA first fix (Conduits, Boxes within block work, Gypsum Boards & Raised FLooring at level 34 | 20d | 2016-01-12 | 2016-02-03 | C-F-P-1093, C-F-P-1083, SD-CS-L34-1112, C-ELV-MSPA-1705 SS | 66d | 0d | 6,994.34 | GEN |
| C-ELV-MSPA-1845 |  | Installation of Cable Trays & Truncking at level 34 | 25d | 2016-01-30 | 2016-02-28 | C-ELV-RMS-1845 SS+5d | 55d | 0d | 2,769.38 |  |
| C-ELV-MSPA-1815 |  | Installation of second fix (Cabling & Wirring etc..) at level 34 | 25d | 2016-02-29 | 2016-03-28 | C-ELV-MSPA-1805, C-ELV-MSPA-1845 | 56d | 0d | 6,994.34 | GEN |
| C-ELV-MSPA-1825 |  | Installation & Connection of speakers, Amplifier & Controller at level 34 | 25d | 2016-03-29 | 2016-04-26 | C-ELV-MSPA-1815 | 56d | 0d | 16,320.12 | GEN |
| C-ELV-MSPA-1835 |  | Installtion & Connection of Media hub, panels and processor at level 34 | 20d | 2016-04-27 | 2016-05-19 | C-ELV-MSPA-1825, C-ELV-MSPA-1735 SS | 177d | 14d | 16,320.12 |  |

Notes:
- C-MEP-PD-1805: Expenses: 1 83874.1
- C-MEP-PD-1815: Expenses: 1 30204.4
- C-MEP-PD-1825: Expenses: 1 9573.63
- C-MEP-PD-1835: Expenses: 1 1651.42
- C-MEP-PD-1845: Expenses: 1 13120.3
- C-ELV-RMS-1805: Expenses: 1 11902.8
- C-ELV-RMS-1845: Expenses: 1 2769.38
- C-ELV-RMS-1815: Expenses: 1 11902.8
- C-ELV-RMS-1825: Expenses: 1 27773.2
- C-ELV-RMS-1835: Expenses: 1 27773.2
- C-ELV-FA-1805: Expenses: 1 13660.9
- C-ELV-FA-1845: Expenses: 1 2769.38
- C-ELV-FA-1815: Expenses: 1 22768.2
- C-ELV-FA-1825: Expenses: 1 27321.8
- C-ELV-FA-1835: Expenses: 1 27321.8
- C-ELV-MSPA-1805: Expenses: 1 6994.34
- C-ELV-MSPA-1845: Expenses: 1 2769.38
- C-ELV-MSPA-1815: Expenses: 1 6994.34
- C-ELV-MSPA-1825: Expenses: 1 16320.1
- C-ELV-MSPA-1835: Expenses: 1 16320.1

| ID | WBS | Activity | Duration | Start | Finish | Predecessors | Total float | Free float | Cost | AREA |
| --- | --- | --- | --- | --- | --- | --- | --- | --- | --- | --- |
|  | 3 | **IP CCTV & Access Control System** |  | 2016-01-12 | 2016-07-04 |  |  |  |  |  |
| C-ELV-CCTV-1805 |  | Installation of CCTV first Fix Conduits, Boxes within block work, Gypsum Boards & Raised FLooring at level 34 | 20d | 2016-01-12 | 2016-02-03 | C-F-P-1093, C-F-P-1083, SD-CS-L34-1152, C-ELV-CCTV-1705 SS | 87d | 14d | 8,161.35 | GEN |
| C-ELV-CCTV-1845 |  | Installation of Cable Trays & Truncking at level 34 | 25d | 2016-02-11 | 2016-03-10 | C-ELV-FA-1845 SS+5d | 55d | 0d | 2,769.38 |  |
| C-ELV-CCTV-1815 |  | Installation of second fix (Cabling & Wirring etc..) at level 34 | 20d | 2016-03-12 | 2016-04-03 | C-ELV-CCTV-1805, C-ELV-CCTV-1845 | 58d | 0d | 19,043.14 | GEN |
| C-ELV-CCTV-1825 |  | Installation & Connection of Camera's & Alarms at level 34 | 18d | 2016-04-04 | 2016-04-24 | C-ELV-CCTV-1815 | 58d | 3d | 183,698.91 | GEN |
| C-ELV-CCTV-1835 |  | Installtion & Connection of Racks, Panels etc... at level 34 | 25d | 2016-06-06 | 2016-07-04 | C-ELV-CCTV-1825 FF, C-ELV-CCTV-1735 SS | 123d | 0d | 7,322.52 |  |
|  | 7 | **Communication System** |  | 2016-01-12 | 2016-08-06 |  |  |  |  |  |
| C-ELV-CS-1805 |  | Installation of CS first fix (Conduits, Boxes within block work, Gypsum Boards & Raised FLooring at level 34 | 20d | 2016-01-12 | 2016-02-03 | C-F-P-1093, C-F-P-1083, SD-CS-L34-1072, C-ELV-CS-1705 SS | 66d | 3d | 27,356.12 | GEN |
| C-ELV-CS-1845 |  | Installation of Cable Trays & Truncking at level 34 | 18d | 2016-01-18 | 2016-02-07 | C-MEP-E-2216 SS | 55d | 0d | 2,769.38 |  |
| C-ELV-CS-1815 |  | Installation of second fix (Cabling & Wirring etc..) at level 34 | 25d | 2016-02-08 | 2016-03-08 | C-ELV-CS-1805, C-ELV-CS-1845 | 73d | 0d | 82,068.35 | GEN |
| C-ELV-CS-1825 |  | Installation & Connection of Wireless Access points & IP dect phone & RJ 45 at level 34 | 25d | 2016-03-09 | 2016-04-06 | C-ELV-CS-1815 | 73d | 18d | 93,342.54 | GEN |
| C-ELV-CS-1835 |  | Installtion & Connection of Controller & Instrumentation at level 34 | 20d | 2016-07-14 | 2016-08-06 | C-ELV-CS-1825, C-ELV-CS-1735 SS | 137d | 0d | 223,314.69 |  |
|  | 4 | **IP, SMATV & QAM Television System** |  | 2016-01-12 | 2016-06-04 |  |  |  |  |  |
| C-ELV-SMATV-1805 |  | Installation of SMATV first Fix Conduits, Boxes within block work , Gypsum Boards & Raised FLooring at level 34 | 20d | 2016-01-12 | 2016-02-03 | C-F-P-1093, C-F-P-1083, SD-CS-L34-1172, C-ELV-SMATV-1705 SS | 72d | 0d | 4,452.18 | GEN |
| C-ELV-SMATV-1845 |  | Installation of Cable Trays & Truncking at level 34 | 25d | 2016-02-17 | 2016-03-16 | C-ELV-CCTV-1845 SS+5d | 55d | 0d | 2,769.38 |  |
| C-ELV-SMATV-1815 |  | Installation of second fix (Cabling & Wirring etc..) at level 34 | 16d | 2016-03-17 | 2016-04-04 | C-ELV-SMATV-1805, C-ELV-SMATV-1845 | 57d | 0d | 10,388.41 | GEN |
| C-ELV-SMATV-1825 |  | Installation & Connection of Outlets, switches and splitter at level 34 | 18d | 2016-04-05 | 2016-04-25 | C-ELV-SMATV-1815 | 57d | 2d | 6,537.45 | GEN |
| C-ELV-SMATV-1835 |  | Installtion & Connection of SMATV & QAM fiber & receiver at level 34 | 20d | 2016-05-12 | 2016-06-04 | C-ELV-SMATV-1825, C-ELV-SMATV-1735 | 164d | 0d | 2,419.21 |  |
|  | 5 | **BMS system** |  | 2016-01-20 | 2016-05-30 |  |  |  |  |  |
| C-MEP-BMS-1805 |  | Installation of BMS first Fix Conduits, Boxes within block work , Gypsum Boards & Raised FLooring at level 34 | 20d | 2016-01-20 | 2016-02-13 | C-F-P-1093, C-F-P-1083, SD-CS-L34-1052, C-MEP-BMS-1705 SS | 82d | 7d | 8,895.95 | GEN |
| C-MEP-BMS-1845 |  | Installation of Cable trays & Trunking at level 34 | 20d | 2016-02-23 | 2016-03-16 | C-ELV-SMATV-1845 SS+5d | 55d | 0d |  |  |
| C-MEP-BMS-1815 |  | Installation of BMS Cabling & Wirring at level 34 | 16d | 2016-03-17 | 2016-04-04 | C-MEP-BMS-1805, C-MEP-BMS-1845 | 55d | 0d | 11,861.27 | GEN |
| C-MEP-BMS-1825 |  | Installation & Connection of BMS Sensors, Relays, & Valves at level 34 | 20d | 2016-04-05 | 2016-04-27 | C-MEP-BMS-1815, C-MEP-PD-1835, C-MEP-PD-1825, C-MEP-FF-1454, C-MEP-AC-2948, C-MEP-AC-2928, C-MEP-AC-2938 | 55d | 0d | 14,826.58 | GEN |
| C-MEP-BMS-1835 |  | Installtion & Connection of BMS Racks, Panels etc... at level 34 | 20d | 2016-05-08 | 2016-05-30 | C-MEP-BMS-1825, C-MEP-BMS-1735 SS | 178d | 6d | 14,826.58 |  |

Notes:
- C-ELV-CCTV-1805: Expenses: 1 8161.35
- C-ELV-CCTV-1845: Expenses: 1 2769.38
- C-ELV-CCTV-1815: Expenses: 1 19043.1
- C-ELV-CCTV-1825: Expenses: 1 183699
- C-ELV-CCTV-1835: Expenses: 1 7322.52
- C-ELV-CS-1805: Expenses: 1 27356.1
- C-ELV-CS-1845: Expenses: 1 2769.38
- C-ELV-CS-1815: Expenses: 1 82068.4
- C-ELV-CS-1825: Expenses: 1 93342.5
- C-ELV-CS-1835: Expenses: 1 223315
- C-ELV-SMATV-1805: Expenses: 1 4452.18
- C-ELV-SMATV-1845: Expenses: 1 2769.38
- C-ELV-SMATV-1815: Expenses: 1 10388.4
- C-ELV-SMATV-1825: Expenses: 1 6537.45
- C-ELV-SMATV-1835: Expenses: 1 2419.21
- C-MEP-BMS-1805: Expenses: 1 8895.95
- C-MEP-BMS-1815: Expenses: 1 11861.3
- C-MEP-BMS-1825: Expenses: 1 14826.6
- C-MEP-BMS-1835: Expenses: 1 14826.6

| ID | WBS | Activity | Duration | Start | Finish | Predecessors | Total float | Free float | Cost | AREA |
| --- | --- | --- | --- | --- | --- | --- | --- | --- | --- | --- |
|  | 6 | **Gas System** |  | 2016-11-28 | 2017-01-14 |  |  |  |  |  |
| C-MEP-Gas-2955 |  | Installation & testing of Gas Pipes & Supports at level 34 | 20d | 2016-11-28 | 2016-12-21 | C-MEP-PD-1835, C-MEP-PD-1825, C-MEP-Gas-2945 | 6d | 0d | 4,994.14 | GEN |
| C-MEP-Gas-2965 |  | Installation & testing of Gas Valves at level 34 | 20d | 2016-12-22 | 2017-01-14 | C-MEP-Gas-2955 | 6d | 0d | 3,329.43 |  |
|  | 44 | **MEP - Level 35** |  | 2015-12-30 | 2016-12-14 |  |  |  |  |  |
|  | 1 | **Electrical** |  | 2016-01-16 | 2016-12-14 |  |  |  |  |  |
| C-MEP-E-2526 |  | Installation of first Electrical Fix Conduits, Boxes within block work & Gypsum Boards at level 35 | 20d | 2016-01-16 | 2016-02-07 | C-F-P-1263, C-MEP-E-1386 | 52d | 14d | 55,235.7 | GEN |
| C-MEP-E-2576 |  | Installation of Cable Trays & Truncking at level 35 | 18d | 2016-02-03 | 2016-02-24 | C-MEP-FF-1684 SS+10d, C-MEP-PD-2105 SS+5d, C-MEP-E-1436 | 41d | 0d | 21,017.55 |  |
| C-MEP-E-2536 |  | Installation of Electrical Second Fix (Cabling & Wirring etc..). at level 35 | 18d | 2016-02-25 | 2016-03-16 | C-MEP-E-2526, C-MEP-E-2576, C-MEP-E-1396 | 42d | 0d | 190,528.33 | GEN |
| C-MEP-E-2546 |  | Installation & Connection of Electrical DB's, SMDB's & MCC's at level 35 | 16d | 2016-03-17 | 2016-04-04 | C-MEP-E-2536, C-MEP-E-1886 SS | 60d | 0d | 614,180.99 | GEN |
| C-MEP-E-2566 |  | Installation & Connection of Lighting Fixtures & Sockets at level 35 | 14d | 2016-11-29 | 2016-12-14 | C-MEP-E-2536, C-F-CF-2977, C-F-CF-2967, C-F-WF-1694, C-F-WF-1704, C-MEP-E-1786 | 86d | 0d | 71,857.69 | GEN |
|  | 2 | **HVAC** |  | 2015-12-30 | 2016-11-10 |  |  |  |  |  |
| C-MEP-AC-3368 |  | Installation of Ductwork, Insulation & Dampers at level 35 | 23d | 2015-12-30 | 2016-01-25 | C-F-P-1263 SS, C-MEP-AC-2328, SD-CS-L35-872 | 33d | 0d | 140,612.08 | GEN |
| C-MEP-AC-3388 |  | Installation of Chilled Water Pipes & Valves at level 35 | 25d | 2016-01-11 | 2016-02-08 | C-MEP-AC-3368 SS+10d, C-MEP-AC-2268 | 90d | 0d | 30,741.92 | GEN |
| C-MEP-AC-3428 |  | Installation of HVAC equipments AHU's, FCU's, ERU's, VAV's, CAV's & Fans at level 35 | 25d | 2016-01-25 | 2016-02-23 | C-MEP-AC-3418 FF, C-MEP-AC-3408 FF, C-MEP-AC-3368 SS | 90d | 49d | 408,469.71 | GEN |
| C-MEP-AC-3418 |  | Pressure testing of Ductwork at level 35 | 8d | 2016-02-01 | 2016-02-09 | C-MEP-AC-3368, C-MEP-AC-2938 | 91d | 0d |  | GEN |
| C-MEP-AC-3408 |  | Pressure testing & Insulation of Chilled Water Pipes at level 35 | 12d | 2016-02-09 | 2016-02-23 | C-MEP-AC-3388 | 90d | 0d | 8,821.1 | GEN |
| C-MEP-AC-3378 |  | Installation of Silencers, Attenuators, Isolators & Detectors at level 35 | 12d | 2016-02-11 | 2016-02-24 | C-MEP-AC-3418 | 109d | 68d | 28,274.51 | GEN |
| C-MEP-AC-3398 |  | Installation of Chilled Water Pipes Control Devices & Isolator at level 35 | 8d | 2016-02-24 | 2016-03-03 | C-MEP-AC-3408 | 102d | 61d | 2,889.38 | GEN |
| C-MEP-AC-3438 |  | Installation of Grilles, Diffusers & Controller at level 35 | 12d | 2016-10-29 | 2016-11-10 | C-MEP-AC-3428, C-F-CF-2977, C-F-CF-2967, C-F-WF-1704 FF, C-F-CF-2967 FF, C-F-WF-1694 FF, C-MEP-AC-2398 | 81d | 0d | 55,880.87 | GEN |
|  | 3 | **Fire Fighting** |  | 2016-01-11 | 2016-07-31 |  |  |  |  |  |
| C-MEP-FF-1684 |  | Installation of FIre fighting Pipes at level 35 | 25d | 2016-01-11 | 2016-02-08 | C-MEP-AC-3368 SS+10d, SD-CS-L35-892 | 51d | 0d | 45,406.88 | GEN |
| C-MEP-FF-1704 |  | Pressure testing of fire fighting pipes at level 35 | 8d | 2016-02-09 | 2016-02-18 | C-MEP-FF-1684 | 74d | 0d | 5,280.67 | GEN |
| C-MEP-FF-1694 |  | Installation of fire Fighting Valves at level 35 | 20d | 2016-02-20 | 2016-03-13 | C-MEP-FF-1704 | 74d | 33d | 18,427.34 | GEN |
| C-MEP-FF-1714 |  | Installation of Fire Fighting Sprinklers & Fire hose Cabinets & Extinguishers at level 35 | 14d | 2016-07-16 | 2016-07-31 | C-MEP-FF-1694, C-F-CF-2967, C-F-CF-2957, C-MEP-FF-1704 | 105d | 0d | 64,097.37 | GEN |

Notes:
- C-MEP-Gas-2955: Expenses: 1 4994.14
- C-MEP-Gas-2965: Expenses: 1 3329.43
- C-MEP-E-2526: Expenses: 1 55235.7
- C-MEP-E-2576: Expenses: 1 21017.5
- C-MEP-E-2536: Expenses: 1 57962.7; 2 132566
- C-MEP-E-2546: Expenses: 1 78921.1; 2 535260
- C-MEP-E-2566: Expenses: 1 71857.7
- C-MEP-AC-3368: Expenses: 1 140612
- C-MEP-AC-3388: Expenses: 1 30741.9
- C-MEP-AC-3428: Expenses: 1 408470
- C-MEP-AC-3408: Expenses: 1 8821.1
- C-MEP-AC-3378: Expenses: 1 28274.5
- C-MEP-AC-3398: Expenses: 1 2889.38
- C-MEP-AC-3438: Expenses: 1 55880.9
- C-MEP-FF-1684: Expenses: 1 45406.9
- C-MEP-FF-1704: Expenses: 1 5280.67
- C-MEP-FF-1694: Expenses: 1 18427.3
- C-MEP-FF-1714: Expenses: 1 64097.4

| ID | WBS | Activity | Duration | Start | Finish | Predecessors | Total float | Free float | Cost | AREA |
| --- | --- | --- | --- | --- | --- | --- | --- | --- | --- | --- |
|  | 4 | **Plumbing & Drainage** |  | 2016-01-28 | 2016-11-05 |  |  |  |  |  |
| C-MEP-PD-2105 |  | Installation of Water Pipes & Valves (Hot & Cold atc..) at level 35 | 20d | 2016-01-28 | 2016-02-21 | C-MEP-FF-1684 SS, C-F-P-1273, SD-CS-L35-932 | 41d | 0d | 83,874.06 | GEN |
| C-MEP-PD-2115 |  | Installation drainage Pipes at level 35 | 25d | 2016-01-28 | 2016-02-27 | C-MEP-PD-2105 SS | 79d | 0d | 30,204.4 | GEN |
| C-MEP-PD-2125 |  | Pressure testing & Insullation of water pipes at level 35 | 8d | 2016-02-22 | 2016-03-01 | C-MEP-PD-2105 | 84d | 43d | 9,573.63 | GEN |
| C-MEP-PD-2135 |  | Pressure testing of drainage pipes at level 35 | 8d | 2016-02-28 | 2016-03-07 | C-MEP-PD-2115 | 79d | 38d | 1,651.42 | GEN |
| C-MEP-PD-2145 |  | Installation of Outlets, Drains, Gullies, Cowls, & Clean out at level 35 | 20d | 2016-10-13 | 2016-11-05 | C-MEP-PD-2125, C-MEP-PD-2125 FF, C-F-FF-1694, C-F-WF-1694, C-F-FF-1694 FF, C-F-WF-1714, C-F-WF-1694 FF, C-F-DW-1694, C-MEP-PD-1395 | 110d | 0d | 13,120.28 | GEN |
|  | 7 | **ELV systems** |  | 2016-01-28 | 2016-08-06 |  |  |  |  |  |
|  | 1 | **Room Management System** |  | 2016-01-28 | 2016-06-14 |  |  |  |  |  |
| C-ELV-RMS-2105 |  | Installation of RMS first fix (Conduits, Boxes within block work , Gypsum Boards & Raised FLooring at level 35 | 20d | 2016-01-28 | 2016-02-21 | C-F-P-1273, C-F-P-1263, SD-CS-L35-1112, C-ELV-RMS-1805 SS | 62d | 0d | 11,902.78 | GEN |
| C-ELV-RMS-2145 |  | Installation of Cable Trays & Truncking at level 35 | 18d | 2016-02-09 | 2016-03-01 | C-ELV-CS-2145 SS+5d | 41d | 0d | 2,769.38 |  |
| C-ELV-RMS-2115 |  | Installation of second fix (Cabling & Wirring etc..) at level 35 | 25d | 2016-03-02 | 2016-03-30 | C-ELV-RMS-2105, C-ELV-RMS-2145 | 54d | 0d | 11,902.78 | GEN |
| C-ELV-RMS-2125 |  | Installation & Connection of ethernets & HVAC thermostates etc.. at level 35 | 25d | 2016-03-31 | 2016-04-28 | C-ELV-RMS-2115 | 54d | 13d | 27,773.16 | GEN |
| C-ELV-RMS-2135 |  | Installtion & Connection of Panels, Controller, switches, server etc..) at level 35 | 20d | 2016-05-23 | 2016-06-14 | C-ELV-RMS-2125, C-ELV-RMS-1835 | 199d | 110d | 27,773.16 |  |
|  | 12 | **Fire Alarm & Detection System** |  | 2016-01-28 | 2016-06-13 |  |  |  |  |  |
| C-ELV-FA-2105 |  | Installation of FA first Fix Conduits, Boxes within block work , Gypsum Boards & Raised FLooring at level 35 | 20d | 2016-01-28 | 2016-02-21 | C-F-P-1273, C-F-P-1263, C-ELV-FA-1805 SS | 47d | 0d | 13,660.92 | GEN |
| C-ELV-FA-2145 |  | Installation of Cable Trays & Truncking at level 35 | 18d | 2016-02-22 | 2016-03-13 | C-ELV-MSPA-2145 SS+5d, SD-CS-L35-1152 | 41d | 0d | 2,769.38 |  |
| C-ELV-FA-2115 |  | Installation of second fix (Cabling & Wirring etc..) at level 35 | 20d | 2016-03-14 | 2016-04-05 | C-ELV-FA-2105, C-ELV-FA-2145 | 49d | 0d | 22,768.2 | GEN |
| C-ELV-FA-2125 |  | Installation & Connection of heat detector, smoke detector, flame detector etc.. at level 35 | 25d | 2016-04-06 | 2016-05-04 | C-ELV-FA-2115 | 49d | 8d | 27,321.84 | GEN |
| C-ELV-FA-2135 |  | Installtion & Connection of Racks & Panels at level 35 | 20d | 2016-05-22 | 2016-06-13 | C-ELV-FA-2125, C-ELV-FA-1835 SS | 156d | 0d | 27,321.84 |  |
|  | 2 | **Music System & Public Address System** |  | 2016-01-28 | 2016-05-28 |  |  |  |  |  |
| C-ELV-MSPA-2105 |  | Installation of MS/PA first fix (Conduits, Boxes within block work, Gypsum Boards & Raised FLooring at level 35 | 20d | 2016-01-28 | 2016-02-21 | C-F-P-1273, C-F-P-1263, SD-CS-L35-1132, C-ELV-MSPA-1805 SS | 52d | 0d | 6,994.34 | GEN |
| C-ELV-MSPA-2145 |  | Installation of Cable Trays & Truncking at level 35 | 18d | 2016-02-16 | 2016-03-07 | C-ELV-RMS-2145 SS+5d | 41d | 0d | 2,769.38 |  |
| C-ELV-MSPA-2115 |  | Installation of second fix (Cabling & Wirring etc..) at level 35 | 25d | 2016-03-08 | 2016-04-05 | C-ELV-MSPA-2105, C-ELV-MSPA-2145 | 49d | 0d | 6,994.34 | GEN |
| C-ELV-MSPA-2125 |  | Installation & Connection of speakers, Amplifier & Controller at level 35 | 25d | 2016-04-06 | 2016-05-04 | C-ELV-MSPA-2115 | 49d | 0d | 16,320.12 | GEN |
| C-ELV-MSPA-2135 |  | Installtion & Connection of Media hub, panels and processor at level 35 | 20d | 2016-05-05 | 2016-05-28 | C-ELV-MSPA-2125 | 214d | 125d | 16,320.12 |  |

Notes:
- C-MEP-PD-2105: Expenses: 1 83874.1
- C-MEP-PD-2115: Expenses: 1 30204.4
- C-MEP-PD-2125: Expenses: 1 9573.63
- C-MEP-PD-2135: Expenses: 1 1651.42
- C-MEP-PD-2145: Expenses: 1 13120.3
- C-ELV-RMS-2105: Expenses: 1 11902.8
- C-ELV-RMS-2145: Expenses: 1 2769.38
- C-ELV-RMS-2115: Expenses: 1 11902.8
- C-ELV-RMS-2125: Expenses: 1 27773.2
- C-ELV-RMS-2135: Expenses: 1 27773.2
- C-ELV-FA-2105: Expenses: 1 13660.9
- C-ELV-FA-2145: Expenses: 1 2769.38
- C-ELV-FA-2115: Expenses: 1 22768.2
- C-ELV-FA-2125: Expenses: 1 27321.8
- C-ELV-FA-2135: Expenses: 1 27321.8
- C-ELV-MSPA-2105: Expenses: 1 6994.34
- C-ELV-MSPA-2145: Expenses: 1 2769.38
- C-ELV-MSPA-2115: Expenses: 1 6994.34
- C-ELV-MSPA-2125: Expenses: 1 16320.1
- C-ELV-MSPA-2135: Expenses: 1 16320.1

| ID | WBS | Activity | Duration | Start | Finish | Predecessors | Total float | Free float | Cost | AREA |
| --- | --- | --- | --- | --- | --- | --- | --- | --- | --- | --- |
|  | 3 | **IP CCTV & Access Control System** |  | 2016-01-28 | 2016-07-04 |  |  |  |  |  |
| C-ELV-CCTV-2105 |  | Installation of CCTV first Fix Conduits, Boxes within block work, Gypsum Boards & Raised FLooring at level 35 | 20d | 2016-01-28 | 2016-02-21 | C-F-P-1273, C-F-P-1263, SD-CS-L35-1172, C-ELV-CCTV-1805 SS | 73d | 0d | 8,161.35 | GEN |
| C-ELV-CCTV-2145 |  | Installation of Cable Trays & Truncking at level 35 | 18d | 2016-02-28 | 2016-03-19 | C-ELV-FA-2145 SS+5d | 41d | 0d | 2,769.38 |  |
| C-ELV-CCTV-2115 |  | Installation of second fix (Cabling & Wirring etc..) at level 35 | 20d | 2016-03-20 | 2016-04-11 | C-ELV-CCTV-2105, C-ELV-CCTV-2145 | 51d | 0d | 19,043.14 | GEN |
| C-ELV-CCTV-2125 |  | Installation & Connection of Camera's & Alarms at level 35 | 18d | 2016-04-12 | 2016-05-02 | C-ELV-CCTV-2115 | 51d | 10d | 183,698.91 | GEN |
| C-ELV-CCTV-2135 |  | Installtion & Connection of Racks, Panels etc... at level 35 | 25d | 2016-06-06 | 2016-07-04 | C-ELV-CCTV-2125 FF, C-ELV-CCTV-1835 SS | 123d | 0d | 7,322.52 |  |
|  | 7 | **Communication System** |  | 2016-01-28 | 2016-08-06 |  |  |  |  |  |
| C-ELV-CS-2105 |  | Installation of CS first fix (Conduits, Boxes within block work, Gypsum Boards & Raised FLooring at level 35 | 20d | 2016-01-28 | 2016-02-21 | C-F-P-1273, C-F-P-1263, SD-CS-L35-1092, C-ELV-CS-1805 SS | 52d | 0d | 27,356.12 | GEN |
| C-ELV-CS-2145 |  | Installation of Cable Trays & Truncking at level 35 | 18d | 2016-02-03 | 2016-02-24 | C-MEP-E-2576 SS | 41d | 0d | 2,769.38 |  |
| C-ELV-CS-2115 |  | Installation of second fix (Cabling & Wirring etc..) at level 35 | 25d | 2016-02-25 | 2016-03-24 | C-ELV-CS-2105, C-ELV-CS-2145 | 59d | 0d | 82,068.35 | GEN |
| C-ELV-CS-2125 |  | Installation & Connection of Wireless Access points & IP dect phone & RJ 45 at level 35 | 25d | 2016-03-26 | 2016-04-23 | C-ELV-CS-2115 | 59d | 18d | 93,342.54 | GEN |
| C-ELV-CS-2135 |  | Installtion & Connection of Controller & Instrumentation at level 35 | 20d | 2016-07-14 | 2016-08-06 | C-ELV-CS-2125, C-ELV-CS-1835 SS | 137d | 0d | 223,314.69 |  |
|  | 4 | **IP, SMATV & QAM Television System** |  | 2016-02-04 | 2016-06-04 |  |  |  |  |  |
| C-ELV-SMATV-2105 |  | Installation of SMATV first Fix Conduits, Boxes within block work , Gypsum Boards & Raised FLooring at level 35 | 20d | 2016-02-04 | 2016-02-28 | C-F-P-1273, C-F-P-1263, SD-CS-L35-1192, C-ELV-SMATV-1805 | 72d | 0d | 4,452.18 | GEN |
| C-ELV-SMATV-2145 |  | Installation of Cable Trays & Truncking at level 35 | 18d | 2016-03-05 | 2016-03-24 | C-ELV-CCTV-2145 SS+5d | 41d | 0d | 2,769.38 |  |
| C-ELV-SMATV-2115 |  | Installation of second fix (Cabling & Wirring etc..) at level 35 | 16d | 2016-03-26 | 2016-04-12 | C-ELV-SMATV-2105, C-ELV-SMATV-2145 | 50d | 0d | 10,388.41 | GEN |
| C-ELV-SMATV-2125 |  | Installation & Connection of Outlets, switches and splitter at level 35 | 18d | 2016-04-13 | 2016-05-03 | C-ELV-SMATV-2115 | 50d | 7d | 6,537.45 | GEN |
| C-ELV-SMATV-2135 |  | Installtion & Connection of SMATV & QAM fiber & receiver at level 35 | 20d | 2016-05-12 | 2016-06-04 | C-ELV-SMATV-2125, C-ELV-SMATV-1835 SS | 164d | 0d | 2,419.21 |  |
|  | 5 | **BMS system** |  | 2016-01-28 | 2016-06-06 |  |  |  |  |  |
| C-MEP-BMS-2105 |  | Installation of BMS first Fix Conduits, Boxes within block work , Gypsum Boards & Raised FLooring at level 35 | 20d | 2016-01-28 | 2016-02-21 | C-F-P-1273, C-F-P-1263, SD-CS-L35-1072, C-MEP-BMS-1805 SS | 75d | 0d | 8,895.95 | GEN |
| C-MEP-BMS-2145 |  | Installation of Cable trays & Trunking at level 35 | 20d | 2016-03-10 | 2016-04-02 | C-ELV-SMATV-2145 SS+5d | 41d | 0d |  |  |
| C-MEP-BMS-2115 |  | Installation of BMS Cabling & Wirring at level 35 | 16d | 2016-04-03 | 2016-04-20 | C-MEP-BMS-2105, C-MEP-BMS-2145 | 41d | 0d | 11,861.27 | GEN |
| C-MEP-BMS-2125 |  | Installation & Connection of BMS Sensors, Relays, & Valves at level 35 | 20d | 2016-04-21 | 2016-05-14 | C-MEP-BMS-2115, C-MEP-PD-2135, C-MEP-PD-2125, C-MEP-FF-1694, C-MEP-AC-3428, C-MEP-AC-3408, C-MEP-AC-3418 | 41d | 0d | 14,826.58 | GEN |
| C-MEP-BMS-2135 |  | Installtion & Connection of BMS Racks, Panels etc... at level 35 | 20d | 2016-05-15 | 2016-06-06 | C-MEP-BMS-2125, C-MEP-BMS-1835 SS | 172d | 0d | 14,826.58 |  |

Notes:
- C-ELV-CCTV-2105: Expenses: 1 8161.35
- C-ELV-CCTV-2145: Expenses: 1 2769.38
- C-ELV-CCTV-2115: Expenses: 1 19043.1
- C-ELV-CCTV-2125: Expenses: 1 183699
- C-ELV-CCTV-2135: Expenses: 1 7322.52
- C-ELV-CS-2105: Expenses: 1 27356.1
- C-ELV-CS-2145: Expenses: 1 2769.38
- C-ELV-CS-2115: Expenses: 1 82068.4
- C-ELV-CS-2125: Expenses: 1 93342.5
- C-ELV-CS-2135: Expenses: 1 223315
- C-ELV-SMATV-2105: Expenses: 1 4452.18
- C-ELV-SMATV-2145: Expenses: 1 2769.38
- C-ELV-SMATV-2115: Expenses: 1 10388.4
- C-ELV-SMATV-2125: Expenses: 1 6537.45
- C-ELV-SMATV-2135: Expenses: 1 2419.21
- C-MEP-BMS-2105: Expenses: 1 8895.95
- C-MEP-BMS-2115: Expenses: 1 11861.3
- C-MEP-BMS-2125: Expenses: 1 14826.6
- C-MEP-BMS-2135: Expenses: 1 14826.6

| ID | WBS | Activity | Duration | Start | Finish | Predecessors | Total float | Free float | Cost | AREA |
| --- | --- | --- | --- | --- | --- | --- | --- | --- | --- | --- |
|  | 43 | **MEP - Level 36** |  | 2015-12-30 | 2016-11-27 |  |  |  |  |  |
|  | 1 | **Electrical** |  | 2016-01-16 | 2016-11-27 |  |  |  |  |  |
| C-MEP-E-2226 |  | Installation of first Electrical Fix Conduits, Boxes within block work & Gypsum Boards at level 36 | 20d | 2016-01-16 | 2016-02-07 | C-F-P-1113, C-MEP-E-1626 | 70d | 14d | 55,235.7 | GEN |
| C-MEP-E-2276 |  | Installation of Cable Trays & Truncking at level 36 | 18d | 2016-02-03 | 2016-02-24 | C-MEP-FF-1484 SS+10d, C-MEP-PD-1855 SS+5d, C-MEP-E-1676 | 41d | 0d | 21,017.55 |  |
| C-MEP-E-2236 |  | Installation of Electrical Second Fix (Cabling & Wirring etc..). at level 36 | 18d | 2016-02-25 | 2016-03-16 | C-MEP-E-2226, C-MEP-E-2276, C-MEP-E-1636 | 58d | 0d | 190,528.33 | GEN |
| C-MEP-E-2246 |  | Installation & Connection of Electrical DB's, SMDB's at level 36 | 16d | 2016-03-17 | 2016-04-04 | C-MEP-E-2236, C-MEP-E-1946 SS | 60d | 18d | 78,921.15 | GEN |
| C-MEP-E-2266 |  | Installation & Connection of Lighting Fixtures & Sockets at level 36 | 14d | 2016-11-12 | 2016-11-27 | C-MEP-E-2236, C-F-CF-2627, C-F-CF-2617, C-F-WF-1494, C-F-WF-1504, C-MEP-E-2026, C-F-P-LSF-662 FF | 101d | 3d | 71,857.69 | GEN |
|  | 2 | **HVAC** |  | 2015-12-30 | 2016-11-10 |  |  |  |  |  |
| C-MEP-AC-2968 |  | Installation of Ductwork, Insulation & Dampers at level 36 | 23d | 2015-12-30 | 2016-01-25 | C-F-P-1113 SS, C-MEP-AC-2648, SD-CS-L36-892 | 40d | 0d | 140,612.08 | GEN |
| C-MEP-AC-2988 |  | Installation of Chilled Water Pipes & Valves at level 36 | 25d | 2016-01-11 | 2016-02-08 | C-MEP-AC-2968 SS+10d, C-MEP-AC-1868 | 90d | 0d | 30,741.92 | GEN |
| C-MEP-AC-3028 |  | Installation of HVAC equipments AHU's, FCU's, ERU's, VAV's, CAV's & Fans at level 36 | 25d | 2016-01-25 | 2016-02-23 | C-MEP-AC-3018 FF, C-MEP-AC-3008 FF, C-MEP-AC-2968 SS | 90d | 49d | 48,356.72 | GEN |
| C-MEP-AC-3008 |  | Pressure testing & Insulation of Chilled Water Pipes at level 36 | 12d | 2016-02-09 | 2016-02-23 | C-MEP-AC-2988 | 90d | 0d | 8,821.1 | GEN |
| C-MEP-AC-3018 |  | Pressure testing of Ductwork at level 36 | 8d | 2016-02-11 | 2016-02-20 | C-MEP-AC-2968, C-MEP-AC-3418 | 91d | 0d |  | GEN |
| C-MEP-AC-2978 |  | Installation of Silencers, Attenuators, Isolators & Detectors at level 36 | 12d | 2016-02-21 | 2016-03-05 | C-MEP-AC-3018 | 101d | 60d | 28,274.51 | GEN |
| C-MEP-AC-2998 |  | Installation of Chilled Water Pipes Control Devices & Isolator at level 36 | 8d | 2016-02-24 | 2016-03-03 | C-MEP-AC-3008 | 102d | 61d | 2,889.38 | GEN |
| C-MEP-AC-3038 |  | Installation of Grilles, Diffusers & Controller at level 36 | 12d | 2016-10-29 | 2016-11-10 | C-MEP-AC-3028, C-F-CF-2627, C-F-CF-2617, C-F-WF-1504 FF, C-F-CF-2617 FF, C-F-WF-1494 FF, C-MEP-AC-2718 SS | 51d | 17d | 55,880.87 | GEN |
|  | 3 | **Fire Fighting** |  | 2016-01-11 | 2016-07-31 |  |  |  |  |  |
| C-MEP-FF-1484 |  | Installation of FIre fighting Pipes at level 36 | 25d | 2016-01-11 | 2016-02-08 | C-MEP-AC-2968 SS+10d, SD-CS-L36-912 | 51d | 0d | 45,406.88 | GEN |
| C-MEP-FF-1504 |  | Pressure testing of fire fighting pipes at level 36 | 8d | 2016-02-09 | 2016-02-18 | C-MEP-FF-1484 | 74d | 0d | 5,280.67 | GEN |
| C-MEP-FF-1494 |  | Installation of fire Fighting Valves at level 36 | 20d | 2016-02-20 | 2016-03-13 | C-MEP-FF-1504 | 74d | 33d | 18,427.34 | GEN |
| C-MEP-FF-1514 |  | Installation of Fire Fighting Sprinklers & Fire hose Cabinets & Extinguishers at level 36 | 14d | 2016-07-16 | 2016-07-31 | C-MEP-FF-1494, C-F-CF-2617, C-F-CF-2607, C-MEP-FF-1504 | 105d | 0d | 64,097.37 | GEN |
|  | 4 | **Plumbing & Drainage** |  | 2016-01-28 | 2016-11-05 |  |  |  |  |  |
| C-MEP-PD-1855 |  | Installation of Water Pipes & Valves (Hot & Cold atc..) at level 36 | 20d | 2016-01-28 | 2016-02-21 | C-MEP-FF-1484 SS, C-F-P-1123, SD-CS-L36-952 | 41d | 0d | 83,874.06 | GEN |
| C-MEP-PD-1865 |  | Installation drainage Pipes at level 36 | 25d | 2016-01-28 | 2016-02-27 | C-MEP-PD-1855 SS | 79d | 0d | 30,204.4 | GEN |
| C-MEP-PD-1875 |  | Pressure testing & Insullation of water pipes at level 36 | 8d | 2016-02-22 | 2016-03-01 | C-MEP-PD-1855 | 84d | 43d | 9,573.63 | GEN |
| C-MEP-PD-1885 |  | Pressure testing of drainage pipes at level 36 | 8d | 2016-02-28 | 2016-03-07 | C-MEP-PD-1865 | 79d | 38d | 1,651.42 | GEN |
| C-MEP-PD-1895 |  | Installation of Outlets, Drains, Gullies, Cowls, & Clean out at level 36 | 20d | 2016-10-13 | 2016-11-05 | C-MEP-PD-1875, C-MEP-PD-1875 FF, C-F-FF-1494, C-F-WF-1494, C-F-FF-1494 FF, C-F-WF-1514, C-F-WF-1494 FF, C-F-DW-1494, C-MEP-PD-1495, C-F-P-LSF-662 FF | 100d | 0d | 13,120.28 | GEN |

Notes:
- C-MEP-E-2226: Expenses: 1 55235.7
- C-MEP-E-2276: Expenses: 1 21017.5
- C-MEP-E-2236: Expenses: 1 57962.7; 2 132566
- C-MEP-E-2246: Expenses: 1 78921.1
- C-MEP-E-2266: Expenses: 1 71857.7
- C-MEP-AC-2968: Expenses: 1 140612
- C-MEP-AC-2988: Expenses: 1 30741.9
- C-MEP-AC-3028: Expenses: 1 48356.7
- C-MEP-AC-3008: Expenses: 1 8821.1
- C-MEP-AC-2978: Expenses: 1 28274.5
- C-MEP-AC-2998: Expenses: 1 2889.38
- C-MEP-AC-3038: Expenses: 1 55880.9
- C-MEP-FF-1484: Expenses: 1 45406.9
- C-MEP-FF-1504: Expenses: 1 5280.67
- C-MEP-FF-1494: Expenses: 1 18427.3
- C-MEP-FF-1514: Expenses: 1 64097.4
- C-MEP-PD-1855: Expenses: 1 83874.1
- C-MEP-PD-1865: Expenses: 1 30204.4
- C-MEP-PD-1875: Expenses: 1 9573.63
- C-MEP-PD-1885: Expenses: 1 1651.42
- C-MEP-PD-1895: Expenses: 1 13120.3

| ID | WBS | Activity | Duration | Start | Finish | Predecessors | Total float | Free float | Cost | AREA |
| --- | --- | --- | --- | --- | --- | --- | --- | --- | --- | --- |
|  | 7 | **ELV systems** |  | 2016-01-28 | 2016-08-06 |  |  |  |  |  |
|  | 1 | **Room Management System** |  | 2016-01-28 | 2016-05-30 |  |  |  |  |  |
| C-ELV-RMS-1855 |  | Installation of RMS first fix (Conduits, Boxes within block work , Gypsum Boards & Raised FLooring at level 36 | 20d | 2016-01-28 | 2016-02-21 | C-F-P-1123, C-F-P-1113, SD-CS-L36-1132, C-ELV-RMS-2105 SS | 62d | 4d | 11,902.78 | GEN |
| C-ELV-RMS-1895 |  | Installation of Cable Trays & Truncking at level 36 | 25d | 2016-02-09 | 2016-03-09 | C-ELV-CS-1895 SS+5d | 41d | 0d | 2,769.38 |  |
| C-ELV-RMS-1865 |  | Installation of second fix (Cabling & Wirring etc..) at level 36 | 25d | 2016-03-10 | 2016-04-07 | C-ELV-RMS-1855, C-ELV-RMS-1895 | 47d | 0d | 11,902.78 | GEN |
| C-ELV-RMS-1875 |  | Installation & Connection of ethernets & HVAC thermostates etc.. at level 36 | 25d | 2016-04-09 | 2016-05-07 | C-ELV-RMS-1865 | 47d | 0d | 27,773.16 | GEN |
| C-ELV-RMS-1885 |  | Installtion & Connection of Panels, Controller, switches, server etc..) at level 36 | 20d | 2016-05-08 | 2016-05-30 | C-ELV-RMS-1875, C-ELV-RMS-1835 SS | 168d | 4d | 27,773.16 |  |
|  | 12 | **Fire Alarm & Detection System** |  | 2016-02-22 | 2016-06-13 |  |  |  |  |  |
| C-ELV-FA-1855 |  | Installation of FA first Fix Conduits, Boxes within block work , Gypsum Boards & Raised FLooring at level 36 | 20d | 2016-02-22 | 2016-03-15 | C-F-P-1123, C-F-P-1113, C-ELV-FA-2105 | 47d | 0d | 13,660.92 | GEN |
| C-ELV-FA-1895 |  | Installation of Cable Trays & Truncking at level 36 | 25d | 2016-02-22 | 2016-03-21 | C-ELV-MSPA-1895 SS+5d, SD-CS-L36-1172 | 41d | 0d | 2,769.38 |  |
| C-ELV-FA-1865 |  | Installation of second fix (Cabling & Wirring etc..) at level 36 | 20d | 2016-03-22 | 2016-04-13 | C-ELV-FA-1855, C-ELV-FA-1895 | 42d | 0d | 22,768.2 | GEN |
| C-ELV-FA-1875 |  | Installation & Connection of heat detector, smoke detector, flame detector etc.. at level 36 | 25d | 2016-04-14 | 2016-05-12 | C-ELV-FA-1865 | 42d | 1d | 27,321.84 | GEN |
| C-ELV-FA-1885 |  | Installtion & Connection of Racks & Panels at level 36 | 20d | 2016-05-22 | 2016-06-13 | C-ELV-FA-1875, C-ELV-FA-2135 SS | 156d | 0d | 27,321.84 |  |
|  | 2 | **Music System & Public Address System** |  | 2016-01-28 | 2016-06-05 |  |  |  |  |  |
| C-ELV-MSPA-1855 |  | Installation of MS/PA first fix (Conduits, Boxes within block work, Gypsum Boards & Raised FLooring at level 36 | 20d | 2016-01-28 | 2016-02-21 | C-F-P-1123, C-F-P-1113, SD-CS-L36-1152, C-ELV-MSPA-2105 SS | 52d | 0d | 6,994.34 | GEN |
| C-ELV-MSPA-1895 |  | Installation of Cable Trays & Truncking at level 36 | 25d | 2016-02-16 | 2016-03-15 | C-ELV-RMS-1895 SS+5d | 41d | 0d | 2,769.38 |  |
| C-ELV-MSPA-1865 |  | Installation of second fix (Cabling & Wirring etc..) at level 36 | 25d | 2016-03-16 | 2016-04-13 | C-ELV-MSPA-1855, C-ELV-MSPA-1895 | 42d | 0d | 6,994.34 | GEN |
| C-ELV-MSPA-1875 |  | Installation & Connection of speakers, Amplifier & Controller at level 36 | 25d | 2016-04-14 | 2016-05-12 | C-ELV-MSPA-1865 | 42d | 0d | 16,320.12 | GEN |
| C-ELV-MSPA-1885 |  | Installtion & Connection of Media hub, panels and processor at level 36 | 20d | 2016-05-14 | 2016-06-05 | C-ELV-MSPA-1875, C-ELV-MSPA-1835 SS | 163d | 0d | 16,320.12 |  |
|  | 3 | **IP CCTV & Access Control System** |  | 2016-01-28 | 2016-07-04 |  |  |  |  |  |
| C-ELV-CCTV-1855 |  | Installation of CCTV first Fix Conduits, Boxes within block work, Gypsum Boards & Raised FLooring at level 36 | 20d | 2016-01-28 | 2016-02-21 | C-F-P-1123, C-F-P-1113, SD-CS-L36-1192, C-ELV-CCTV-2105 SS | 73d | 4d | 8,161.35 | GEN |
| C-ELV-CCTV-1895 |  | Installation of Cable Trays & Truncking at level 36 | 25d | 2016-02-28 | 2016-03-27 | C-ELV-FA-1895 SS+5d | 41d | 0d | 2,769.38 |  |
| C-ELV-CCTV-1865 |  | Installation of second fix (Cabling & Wirring etc..) at level 36 | 20d | 2016-03-28 | 2016-04-19 | C-ELV-CCTV-1855, C-ELV-CCTV-1895 | 44d | 0d | 19,043.14 | GEN |
| C-ELV-CCTV-1875 |  | Installation & Connection of Camera's & Alarms at level 36 | 18d | 2016-04-20 | 2016-05-10 | C-ELV-CCTV-1865 | 44d | 3d | 183,698.91 | GEN |
| C-ELV-CCTV-1885 |  | Installtion & Connection of Racks, Panels etc... at level 36 | 25d | 2016-06-06 | 2016-07-04 | C-ELV-CCTV-1875 FF, C-ELV-CCTV-2135 SS | 123d | 0d | 7,322.52 |  |

Notes:
- C-ELV-RMS-1855: Expenses: 1 11902.8
- C-ELV-RMS-1895: Expenses: 1 2769.38
- C-ELV-RMS-1865: Expenses: 1 11902.8
- C-ELV-RMS-1875: Expenses: 1 27773.2
- C-ELV-RMS-1885: Expenses: 1 27773.2
- C-ELV-FA-1855: Expenses: 1 13660.9
- C-ELV-FA-1895: Expenses: 1 2769.38
- C-ELV-FA-1865: Expenses: 1 22768.2
- C-ELV-FA-1875: Expenses: 1 27321.8
- C-ELV-FA-1885: Expenses: 1 27321.8
- C-ELV-MSPA-1855: Expenses: 1 6994.34
- C-ELV-MSPA-1895: Expenses: 1 2769.38
- C-ELV-MSPA-1865: Expenses: 1 6994.34
- C-ELV-MSPA-1875: Expenses: 1 16320.1
- C-ELV-MSPA-1885: Expenses: 1 16320.1
- C-ELV-CCTV-1855: Expenses: 1 8161.35
- C-ELV-CCTV-1895: Expenses: 1 2769.38
- C-ELV-CCTV-1865: Expenses: 1 19043.1
- C-ELV-CCTV-1875: Expenses: 1 183699
- C-ELV-CCTV-1885: Expenses: 1 7322.52

| ID | WBS | Activity | Duration | Start | Finish | Predecessors | Total float | Free float | Cost | AREA |
| --- | --- | --- | --- | --- | --- | --- | --- | --- | --- | --- |
|  | 7 | **Communication System** |  | 2016-01-28 | 2016-08-06 |  |  |  |  |  |
| C-ELV-CS-1855 |  | Installation of CS first fix (Conduits, Boxes within block work, Gypsum Boards & Raised FLooring at level 36 | 20d | 2016-01-28 | 2016-02-21 | C-F-P-1123, C-F-P-1113, SD-CS-L36-1112, C-ELV-CS-2105 SS | 52d | 0d | 27,356.12 | GEN |
| C-ELV-CS-1895 |  | Installation of Cable Trays & Truncking at level 36 | 18d | 2016-02-03 | 2016-02-24 | C-MEP-E-2276 SS | 41d | 0d | 2,769.38 |  |
| C-ELV-CS-1865 |  | Installation of second fix (Cabling & Wirring etc..) at level 36 | 25d | 2016-02-25 | 2016-03-24 | C-ELV-CS-1855, C-ELV-CS-1895 | 59d | 0d | 82,068.35 | GEN |
| C-ELV-CS-1875 |  | Installation & Connection of Wireless Access points & IP dect phone & RJ 45 at level 36 | 25d | 2016-03-26 | 2016-04-23 | C-ELV-CS-1865 | 59d | 18d | 93,342.54 | GEN |
| C-ELV-CS-1885 |  | Installtion & Connection of Controller & Instrumentation at level 36 | 20d | 2016-07-14 | 2016-08-06 | C-ELV-CS-1875, C-ELV-CS-2135 SS | 137d | 0d | 223,314.69 |  |
|  | 4 | **IP, SMATV & QAM Television System** |  | 2016-02-04 | 2016-06-04 |  |  |  |  |  |
| C-ELV-SMATV-1855 |  | Installation of SMATV first Fix Conduits, Boxes within block work , Gypsum Boards & Raised FLooring at level 36 | 20d | 2016-02-04 | 2016-02-28 | C-F-P-1123, C-F-P-1113, SD-CS-L36-1212, C-ELV-SMATV-2105 SS | 72d | 0d | 4,452.18 | GEN |
| C-ELV-SMATV-1895 |  | Installation of Cable Trays & Truncking at level 36 | 25d | 2016-03-05 | 2016-04-02 | C-ELV-CCTV-1895 SS+5d | 41d | 0d | 2,769.38 |  |
| C-ELV-SMATV-1865 |  | Installation of second fix (Cabling & Wirring etc..) at level 36 | 16d | 2016-04-03 | 2016-04-20 | C-ELV-SMATV-1855, C-ELV-SMATV-1895 | 43d | 0d | 10,388.41 | GEN |
| C-ELV-SMATV-1875 |  | Installation & Connection of Outlets, switches and splitter at level 36 | 18d | 2016-04-21 | 2016-05-11 | C-ELV-SMATV-1865 | 43d | 0d | 6,537.45 | GEN |
| C-ELV-SMATV-1885 |  | Installtion & Connection of SMATV & QAM fiber & receiver at level 36 | 20d | 2016-05-12 | 2016-06-04 | C-ELV-SMATV-1875, C-ELV-SMATV-2135 SS | 164d | 4d | 2,419.21 |  |
|  | 5 | **BMS system** |  | 2016-01-28 | 2016-06-06 |  |  |  |  |  |
| C-MEP-BMS-1855 |  | Installation of BMS first Fix Conduits, Boxes within block work , Gypsum Boards & Raised FLooring at level 36 | 20d | 2016-01-28 | 2016-02-21 | C-F-P-1123, C-F-P-1113, SD-CS-L36-1092, C-MEP-BMS-2105 SS | 75d | 4d | 8,895.95 | GEN |
| C-MEP-BMS-1895 |  | Installation of Cable trays & Trunking at level 36 | 20d | 2016-03-10 | 2016-04-02 | C-ELV-SMATV-1895 SS+5d | 41d | 0d |  |  |
| C-MEP-BMS-1865 |  | Installation of BMS Cabling & Wirring at level 36 | 16d | 2016-04-03 | 2016-04-20 | C-MEP-BMS-1855, C-MEP-BMS-1895 | 41d | 0d | 11,861.27 | GEN |
| C-MEP-BMS-1875 |  | Installation & Connection of BMS Sensors, Relays, & Valves at level 36 | 20d | 2016-04-21 | 2016-05-14 | C-MEP-BMS-1865, C-MEP-PD-1885, C-MEP-PD-1875, C-MEP-FF-1494, C-MEP-AC-3028, C-MEP-AC-3008, C-MEP-AC-3018 | 41d | 0d | 14,826.58 | GEN |
| C-MEP-BMS-1885 |  | Installtion & Connection of BMS Racks, Panels etc... at level 36 | 20d | 2016-05-15 | 2016-06-06 | C-MEP-BMS-1875, C-MEP-BMS-2135 SS | 172d | 4d | 14,826.58 |  |
|  | 42 | **MEP - Level 37** |  | 2016-01-04 | 2016-12-01 |  |  |  |  |  |
|  | 1 | **Electrical** |  | 2016-01-20 | 2016-12-01 |  |  |  |  |  |
| C-MEP-E-2286 |  | Installation of first Electrical Fix Conduits, Boxes within block work & Gypsum Boards at level 37 | 20d | 2016-01-20 | 2016-02-13 | C-F-P-1143, C-MEP-E-1746 | 40d | 14d | 55,235.7 | GEN |
| C-MEP-E-2336 |  | Installation of Cable Trays & Truncking at level 37 | 18d | 2016-02-08 | 2016-02-29 | C-MEP-FF-1524 SS+10d, C-MEP-PD-1905 SS+5d, C-MEP-E-1796 | 26d | 0d | 21,017.55 |  |
| C-MEP-E-2296 |  | Installation of Electrical Second Fix (Cabling & Wirring etc..). at level 37 | 18d | 2016-03-01 | 2016-03-21 | C-MEP-E-2286, C-MEP-E-2336, C-MEP-E-1756 | 26d | 0d | 190,528.33 | GEN |
| C-MEP-E-2306 |  | Installation & Connection of Electrical DB's, SMDB's at level 37 | 16d | 2016-03-22 | 2016-04-09 | C-MEP-E-2296, C-MEP-E-2066 | 26d | 8d | 78,921.15 | GEN |
| C-MEP-E-2326 |  | Installation & Connection of Lighting Fixtures & Sockets at level 37 | 14d | 2016-11-16 | 2016-12-01 | C-MEP-E-2296, C-F-CF-2697, C-F-CF-2687, C-F-WF-1534, C-F-WF-1544, C-MEP-E-1906, C-F-P-LSF-672 FF | 87d | 0d | 71,857.69 | GEN |

Notes:
- C-ELV-CS-1855: Expenses: 1 27356.1
- C-ELV-CS-1895: Expenses: 1 2769.38
- C-ELV-CS-1865: Expenses: 1 82068.4
- C-ELV-CS-1875: Expenses: 1 93342.5
- C-ELV-CS-1885: Expenses: 1 223315
- C-ELV-SMATV-1855: Expenses: 1 4452.18
- C-ELV-SMATV-1895: Expenses: 1 2769.38
- C-ELV-SMATV-1865: Expenses: 1 10388.4
- C-ELV-SMATV-1875: Expenses: 1 6537.45
- C-ELV-SMATV-1885: Expenses: 1 2419.21
- C-MEP-BMS-1855: Expenses: 1 8895.95
- C-MEP-BMS-1865: Expenses: 1 11861.3
- C-MEP-BMS-1875: Expenses: 1 14826.6
- C-MEP-BMS-1885: Expenses: 1 14826.6
- C-MEP-E-2286: Expenses: 1 55235.7
- C-MEP-E-2336: Expenses: 1 21017.5
- C-MEP-E-2296: Expenses: 1 57962.7; 2 132566
- C-MEP-E-2306: Expenses: 1 78921.1
- C-MEP-E-2326: Expenses: 1 71857.7

| ID | WBS | Activity | Duration | Start | Finish | Predecessors | Total float | Free float | Cost | AREA |
| --- | --- | --- | --- | --- | --- | --- | --- | --- | --- | --- |
|  | 2 | **HVAC** |  | 2016-01-04 | 2016-11-15 |  |  |  |  |  |
| C-MEP-AC-3048 |  | Installation of Ductwork, Insulation & Dampers at level 37 | 23d | 2016-01-04 | 2016-01-30 | C-F-P-1143 SS, C-MEP-AC-2488, SD-CS-L37-912 | 36d | 0d | 140,612.08 | GEN |
| C-MEP-AC-3068 |  | Installation of Chilled Water Pipes & Valves at level 37 | 25d | 2016-01-16 | 2016-02-14 | C-MEP-AC-3048 SS+10d, C-MEP-AC-2188 | 96d | 0d | 30,741.92 | GEN |
| C-MEP-AC-3108 |  | Installation of HVAC equipments AHU's, FCU's, ERU's, VAV's, CAV's & Fans at level 37 | 25d | 2016-01-31 | 2016-02-29 | C-MEP-AC-3098 FF, C-MEP-AC-3088 FF, C-MEP-AC-3048 SS | 95d | 48d | 48,356.72 | GEN |
| C-MEP-AC-3088 |  | Pressure testing & Insulation of Chilled Water Pipes at level 37 | 12d | 2016-02-15 | 2016-02-28 | C-MEP-AC-3068 | 96d | 0d | 8,821.1 | GEN |
| C-MEP-AC-3098 |  | Pressure testing of Ductwork at level 37 | 8d | 2016-02-21 | 2016-02-29 | C-MEP-AC-3048, C-MEP-AC-3018 | 91d | 0d |  | GEN |
| C-MEP-AC-3078 |  | Installation of Chilled Water Pipes Control Devices & Isolator at level 37 | 8d | 2016-02-29 | 2016-03-08 | C-MEP-AC-3088 | 108d | 61d | 2,889.38 | GEN |
| C-MEP-AC-3058 |  | Installation of Silencers, Attenuators, Isolators & Detectors at level 37 | 12d | 2016-03-01 | 2016-03-14 | C-MEP-AC-3098 | 103d | 56d | 28,274.51 | GEN |
| C-MEP-AC-3118 |  | Installation of Grilles, Diffusers & Controller at level 37 | 12d | 2016-11-02 | 2016-11-15 | C-MEP-AC-3108, C-F-CF-2697, C-F-CF-2687, C-F-WF-1544 FF, C-F-CF-2687 FF, C-F-WF-1534 FF, C-MEP-AC-2558 | 77d | 1d | 55,880.87 | GEN |
|  | 3 | **Fire Fighting** |  | 2016-01-16 | 2016-08-04 |  |  |  |  |  |
| C-MEP-FF-1524 |  | Installation of FIre fighting Pipes at level 37 | 25d | 2016-01-16 | 2016-02-14 | C-MEP-AC-3048 SS+10d, SD-CS-L37-932 | 36d | 0d | 45,406.88 | GEN |
| C-MEP-FF-1544 |  | Pressure testing of fire fighting pipes at level 37 | 8d | 2016-02-15 | 2016-02-23 | C-MEP-FF-1524 | 80d | 0d | 5,280.67 | GEN |
| C-MEP-FF-1534 |  | Installation of fire Fighting Valves at level 37 | 20d | 2016-02-24 | 2016-03-17 | C-MEP-FF-1544 | 80d | 33d | 18,427.34 | GEN |
| C-MEP-FF-1554 |  | Installation of Fire Fighting Sprinklers & Fire hose Cabinets & Extinguishers at level 37 | 14d | 2016-07-20 | 2016-08-04 | C-MEP-FF-1534, C-F-CF-2687, C-F-CF-2677, C-MEP-FF-1544 | 111d | 0d | 64,097.37 | GEN |
|  | 4 | **Plumbing & Drainage** |  | 2016-02-02 | 2016-11-09 |  |  |  |  |  |
| C-MEP-PD-1905 |  | Installation of Water Pipes & Valves (Hot & Cold atc..) at level 37 | 20d | 2016-02-02 | 2016-02-25 | C-MEP-FF-1524 SS, C-F-P-1153, SD-CS-L37-972 | 26d | 0d | 83,874.06 | GEN |
| C-MEP-PD-1915 |  | Installation drainage Pipes at level 37 | 25d | 2016-02-02 | 2016-03-02 | C-MEP-PD-1905 SS | 85d | 0d | 30,204.4 | GEN |
| C-MEP-PD-1925 |  | Pressure testing & Insullation of water pipes at level 37 | 8d | 2016-02-27 | 2016-03-06 | C-MEP-PD-1905 | 90d | 43d | 9,573.63 | GEN |
| C-MEP-PD-1935 |  | Pressure testing of drainage pipes at level 37 | 8d | 2016-03-03 | 2016-03-12 | C-MEP-PD-1915 | 85d | 38d | 1,651.42 | GEN |
| C-MEP-PD-1945 |  | Installation of Outlets, Drains, Gullies, Cowls, & Clean out at level 37 | 20d | 2016-10-18 | 2016-11-09 | C-MEP-PD-1925, C-MEP-PD-1925 FF, C-F-FF-1534, C-F-WF-1534, C-F-FF-1534 FF, C-F-WF-1554, C-F-WF-1534 FF, C-F-DW-1534, C-MEP-PD-1695, C-F-P-LSF-672 FF | 106d | 0d | 13,120.28 | GEN |
|  | 7 | **ELV systems** |  | 2016-02-02 | 2016-08-06 |  |  |  |  |  |
|  | 1 | **Room Management System** |  | 2016-02-02 | 2016-06-04 |  |  |  |  |  |
| C-ELV-RMS-1905 |  | Installation of RMS first fix (Conduits, Boxes within block work , Gypsum Boards & Raised FLooring at level 37 | 20d | 2016-02-02 | 2016-02-25 | C-F-P-1153, C-F-P-1143, SD-CS-L37-1152, C-ELV-RMS-1855 SS | 68d | 6d | 11,902.78 | GEN |
| C-ELV-RMS-1945 |  | Installation of Cable Trays & Truncking at level 37 | 25d | 2016-02-15 | 2016-03-14 | C-ELV-CS-1945 SS+5d | 47d | 0d | 2,769.38 |  |
| C-ELV-RMS-1915 |  | Installation of second fix (Cabling & Wirring etc..) at level 37 | 25d | 2016-03-15 | 2016-04-12 | C-ELV-RMS-1905, C-ELV-RMS-1945 | 53d | 0d | 11,902.78 | GEN |
| C-ELV-RMS-1925 |  | Installation & Connection of ethernets & HVAC thermostates etc.. at level 37 | 25d | 2016-04-13 | 2016-05-11 | C-ELV-RMS-1915 | 53d | 0d | 27,773.16 | GEN |
| C-ELV-RMS-1935 |  | Installtion & Connection of Panels, Controller, switches, server etc..) at level 37 | 20d | 2016-05-12 | 2016-06-04 | C-ELV-RMS-1925, C-ELV-RMS-1885 SS | 164d | 6d | 27,773.16 |  |

Notes:
- C-MEP-AC-3048: Expenses: 1 140612
- C-MEP-AC-3068: Expenses: 1 30741.9
- C-MEP-AC-3108: Expenses: 1 48356.7
- C-MEP-AC-3088: Expenses: 1 8821.1
- C-MEP-AC-3078: Expenses: 1 2889.38
- C-MEP-AC-3058: Expenses: 1 28274.5
- C-MEP-AC-3118: Expenses: 1 55880.9
- C-MEP-FF-1524: Expenses: 1 45406.9
- C-MEP-FF-1544: Expenses: 1 5280.67
- C-MEP-FF-1534: Expenses: 1 18427.3
- C-MEP-FF-1554: Expenses: 1 64097.4
- C-MEP-PD-1905: Expenses: 1 83874.1
- C-MEP-PD-1915: Expenses: 1 30204.4
- C-MEP-PD-1925: Expenses: 1 9573.63
- C-MEP-PD-1935: Expenses: 1 1651.42
- C-MEP-PD-1945: Expenses: 1 13120.3
- C-ELV-RMS-1905: Expenses: 1 11902.8
- C-ELV-RMS-1945: Expenses: 1 2769.38
- C-ELV-RMS-1915: Expenses: 1 11902.8
- C-ELV-RMS-1925: Expenses: 1 27773.2
- C-ELV-RMS-1935: Expenses: 1 27773.2

| ID | WBS | Activity | Duration | Start | Finish | Predecessors | Total float | Free float | Cost | AREA |
| --- | --- | --- | --- | --- | --- | --- | --- | --- | --- | --- |
|  | 12 | **Fire Alarm & Detection System** |  | 2016-02-22 | 2016-07-10 |  |  |  |  |  |
| C-ELV-FA-1905 |  | Installation of FA first Fix Conduits, Boxes within block work , Gypsum Boards & Raised FLooring at level 37 | 20d | 2016-02-22 | 2016-03-15 | C-F-P-1153, C-F-P-1143, C-ELV-FA-1855 SS | 57d | 0d | 13,660.92 | GEN |
| C-ELV-FA-1945 |  | Installation of Cable Trays & Truncking at level 37 | 25d | 2016-02-27 | 2016-03-26 | C-ELV-MSPA-1945 SS+5d, SD-CS-L37-1192 | 47d | 0d | 2,769.38 |  |
| C-ELV-FA-1915 |  | Installation of second fix (Cabling & Wirring etc..) at level 37 | 20d | 2016-03-27 | 2016-04-18 | C-ELV-FA-1905, C-ELV-FA-1945 | 48d | 0d | 22,768.2 | GEN |
| C-ELV-FA-1925 |  | Installation & Connection of heat detector, smoke detector, flame detector etc.. at level 37 | 25d | 2016-04-19 | 2016-05-17 | C-ELV-FA-1915 | 48d | 1d | 27,321.84 | GEN |
| C-ELV-FA-1935 |  | Installtion & Connection of Racks & Panels at level 37 | 20d | 2016-06-14 | 2016-07-10 | C-ELV-FA-1925, C-ELV-FA-1885 | 156d | 0d | 27,321.84 |  |
|  | 2 | **Music System & Public Address System** |  | 2016-02-21 | 2016-06-28 |  |  |  |  |  |
| C-ELV-MSPA-1945 |  | Installation of Cable Trays & Truncking at level 37 | 25d | 2016-02-21 | 2016-03-20 | C-ELV-RMS-1945 SS+5d | 47d | 0d | 2,769.38 |  |
| C-ELV-MSPA-1905 |  | Installation of MS/PA first fix (Conduits, Boxes within block work, Gypsum Boards & Raised FLooring at level 37 | 20d | 2016-02-22 | 2016-03-15 | C-F-P-1153, C-F-P-1143, SD-CS-L37-1172, C-ELV-MSPA-1855 | 52d | 0d | 6,994.34 | GEN |
| C-ELV-MSPA-1915 |  | Installation of second fix (Cabling & Wirring etc..) at level 37 | 25d | 2016-03-21 | 2016-04-18 | C-ELV-MSPA-1905, C-ELV-MSPA-1945 | 48d | 0d | 6,994.34 | GEN |
| C-ELV-MSPA-1925 |  | Installation & Connection of speakers, Amplifier & Controller at level 37 | 25d | 2016-04-19 | 2016-05-17 | C-ELV-MSPA-1915 | 48d | 1d | 16,320.12 | GEN |
| C-ELV-MSPA-1935 |  | Installtion & Connection of Media hub, panels and processor at level 37 | 20d | 2016-06-06 | 2016-06-28 | C-ELV-MSPA-1925, C-ELV-MSPA-1885 | 163d | 0d | 16,320.12 |  |
|  | 3 | **IP CCTV & Access Control System** |  | 2016-02-02 | 2016-07-04 |  |  |  |  |  |
| C-ELV-CCTV-1905 |  | Installation of CCTV first Fix Conduits, Boxes within block work, Gypsum Boards & Raised FLooring at level 37 | 20d | 2016-02-02 | 2016-02-25 | C-F-P-1153, C-F-P-1143, SD-CS-L37-1212, C-ELV-CCTV-1855 SS | 69d | 0d | 8,161.35 | GEN |
| C-ELV-CCTV-1945 |  | Installation of Cable Trays & Truncking at level 37 | 25d | 2016-03-03 | 2016-03-31 | C-ELV-FA-1945 SS+5d | 47d | 0d | 2,769.38 |  |
| C-ELV-CCTV-1915 |  | Installation of second fix (Cabling & Wirring etc..) at level 37 | 20d | 2016-04-02 | 2016-04-24 | C-ELV-CCTV-1905, C-ELV-CCTV-1945 | 50d | 0d | 19,043.14 | GEN |
| C-ELV-CCTV-1925 |  | Installation & Connection of Camera's & Alarms at level 37 | 18d | 2016-04-25 | 2016-05-15 | C-ELV-CCTV-1915 | 50d | 3d | 183,698.91 | GEN |
| C-ELV-CCTV-1935 |  | Installtion & Connection of Racks, Panels etc... at level 37 | 25d | 2016-06-06 | 2016-07-04 | C-ELV-CCTV-1925 FF, C-ELV-CCTV-1885 SS | 123d | 0d | 7,322.52 |  |
|  | 7 | **Communication System** |  | 2016-02-08 | 2016-08-06 |  |  |  |  |  |
| C-ELV-CS-1945 |  | Installation of Cable Trays & Truncking at level 37 | 18d | 2016-02-08 | 2016-02-29 | C-MEP-E-2336 SS | 47d | 0d | 2,769.38 |  |
| C-ELV-CS-1905 |  | Installation of CS first fix (Conduits, Boxes within block work, Gypsum Boards & Raised FLooring at level 37 | 20d | 2016-02-22 | 2016-03-15 | C-F-P-1153, C-F-P-1143, SD-CS-L37-1132, C-ELV-CS-1855 | 52d | 0d | 27,356.12 | GEN |
| C-ELV-CS-1915 |  | Installation of second fix (Cabling & Wirring etc..) at level 37 | 25d | 2016-03-16 | 2016-04-13 | C-ELV-CS-1905, C-ELV-CS-1945 | 52d | 0d | 82,068.35 | GEN |
| C-ELV-CS-1925 |  | Installation & Connection of Wireless Access points & IP dect phone & RJ 45 at level 37 | 25d | 2016-04-14 | 2016-05-12 | C-ELV-CS-1915 | 52d | 5d | 93,342.54 | GEN |
| C-ELV-CS-1935 |  | Installtion & Connection of Controller & Instrumentation at level 37 | 20d | 2016-07-14 | 2016-08-06 | C-ELV-CS-1925, C-ELV-CS-1885 SS | 137d | 0d | 223,314.69 |  |

Notes:
- C-ELV-FA-1905: Expenses: 1 13660.9
- C-ELV-FA-1945: Expenses: 1 2769.38
- C-ELV-FA-1915: Expenses: 1 22768.2
- C-ELV-FA-1925: Expenses: 1 27321.8
- C-ELV-FA-1935: Expenses: 1 27321.8
- C-ELV-MSPA-1945: Expenses: 1 2769.38
- C-ELV-MSPA-1905: Expenses: 1 6994.34
- C-ELV-MSPA-1915: Expenses: 1 6994.34
- C-ELV-MSPA-1925: Expenses: 1 16320.1
- C-ELV-MSPA-1935: Expenses: 1 16320.1
- C-ELV-CCTV-1905: Expenses: 1 8161.35
- C-ELV-CCTV-1945: Expenses: 1 2769.38
- C-ELV-CCTV-1915: Expenses: 1 19043.1
- C-ELV-CCTV-1925: Expenses: 1 183699
- C-ELV-CCTV-1935: Expenses: 1 7322.52
- C-ELV-CS-1945: Expenses: 1 2769.38
- C-ELV-CS-1905: Expenses: 1 27356.1
- C-ELV-CS-1915: Expenses: 1 82068.4
- C-ELV-CS-1925: Expenses: 1 93342.5
- C-ELV-CS-1935: Expenses: 1 223315

| ID | WBS | Activity | Duration | Start | Finish | Predecessors | Total float | Free float | Cost | AREA |
| --- | --- | --- | --- | --- | --- | --- | --- | --- | --- | --- |
|  | 4 | **IP, SMATV & QAM Television System** |  | 2016-02-04 | 2016-06-08 |  |  |  |  |  |
| C-ELV-SMATV-1905 |  | Installation of SMATV first Fix Conduits, Boxes within block work , Gypsum Boards & Raised FLooring at level 37 | 20d | 2016-02-04 | 2016-02-28 | C-F-P-1153, C-F-P-1143, SD-CS-L37-1232, C-ELV-SMATV-1855 SS | 72d | 4d | 4,452.18 | GEN |
| C-ELV-SMATV-1945 |  | Installation of Cable Trays & Truncking at level 37 | 25d | 2016-03-09 | 2016-04-06 | C-ELV-CCTV-1945 SS+5d | 47d | 0d | 2,769.38 |  |
| C-ELV-SMATV-1915 |  | Installation of second fix (Cabling & Wirring etc..) at level 37 | 16d | 2016-04-07 | 2016-04-25 | C-ELV-SMATV-1905, C-ELV-SMATV-1945 | 49d | 0d | 10,388.41 | GEN |
| C-ELV-SMATV-1925 |  | Installation & Connection of Outlets, switches and splitter at level 37 | 18d | 2016-04-26 | 2016-05-16 | C-ELV-SMATV-1915 | 49d | 0d | 6,537.45 | GEN |
| C-ELV-SMATV-1935 |  | Installtion & Connection of SMATV & QAM fiber & receiver at level 37 | 20d | 2016-05-17 | 2016-06-08 | C-ELV-SMATV-1925, C-ELV-SMATV-1885 SS | 160d | 6d | 2,419.21 |  |
|  | 5 | **BMS system** |  | 2016-02-02 | 2016-06-11 |  |  |  |  |  |
| C-MEP-BMS-1905 |  | Installation of BMS first Fix Conduits, Boxes within block work , Gypsum Boards & Raised FLooring at level 37 | 20d | 2016-02-02 | 2016-02-25 | C-F-P-1153, C-F-P-1143, SD-CS-L37-1112, C-MEP-BMS-1855 SS | 71d | 0d | 8,895.95 | GEN |
| C-MEP-BMS-1945 |  | Installation of Cable trays & Trunking at level 37 | 20d | 2016-03-15 | 2016-04-06 | C-ELV-SMATV-1945 SS+5d | 47d | 0d |  |  |
| C-MEP-BMS-1915 |  | Installation of BMS Cabling & Wirring at level 37 | 16d | 2016-04-07 | 2016-04-25 | C-MEP-BMS-1905, C-MEP-BMS-1945 | 47d | 0d | 11,861.27 | GEN |
| C-MEP-BMS-1925 |  | Installation & Connection of BMS Sensors, Relays, & Valves at level 37 | 20d | 2016-04-26 | 2016-05-18 | C-MEP-BMS-1915, C-MEP-PD-1935, C-MEP-PD-1925, C-MEP-FF-1534, C-MEP-AC-3108, C-MEP-AC-3088, C-MEP-AC-3098 | 47d | 0d | 14,826.58 | GEN |
| C-MEP-BMS-1935 |  | Installtion & Connection of BMS Racks, Panels etc... at level 37 | 20d | 2016-05-19 | 2016-06-11 | C-MEP-BMS-1925, C-MEP-BMS-1885 SS | 168d | 6d | 14,826.58 |  |
|  | 41 | **MEP - Level 38** |  | 2016-01-11 | 2016-12-08 |  |  |  |  |  |
|  | 1 | **Electrical** |  | 2016-01-27 | 2016-12-08 |  |  |  |  |  |
| C-MEP-E-2406 |  | Installation of first Electrical Fix Conduits, Boxes within block work & Gypsum Boards at level 38 | 20d | 2016-01-27 | 2016-02-20 | C-F-P-1203, C-MEP-E-1986 | 64d | 14d | 55,235.7 | GEN |
| C-MEP-E-2456 |  | Installation of Cable Trays & Truncking at level 38 | 18d | 2016-02-16 | 2016-03-07 | C-MEP-FF-1604 SS+10d, C-MEP-PD-2005 SS+5d, C-MEP-E-2036 | 50d | 0d | 21,017.55 |  |
| C-MEP-E-2416 |  | Installation of Electrical Second Fix (Cabling & Wirring etc..). at level 38 | 18d | 2016-03-08 | 2016-03-28 | C-MEP-E-2406, C-MEP-E-2456, C-MEP-E-1996 | 50d | 0d | 190,528.33 | GEN |
| C-MEP-E-2426 |  | Installation & Connection of Electrical DB's, SMDB's at level 38 | 16d | 2016-03-29 | 2016-04-16 | C-MEP-E-2416, C-MEP-E-2186 | 50d | 16d | 78,921.15 | GEN |
| C-MEP-E-2446 |  | Installation & Connection of Lighting Fixtures & Sockets at level 38 | 14d | 2016-11-23 | 2016-12-08 | C-MEP-E-2416, C-F-CF-2837, C-F-CF-2827, C-F-WF-1614, C-F-WF-1624, C-MEP-E-1966, C-F-P-LSF-682 FF | 91d | 0d | 71,857.69 | GEN |
|  | 2 | **HVAC** |  | 2016-01-11 | 2016-11-22 |  |  |  |  |  |
| C-MEP-AC-3208 |  | Installation of Ductwork, Insulation & Dampers at level 38 | 23d | 2016-01-11 | 2016-02-06 | C-F-P-1203 SS, C-MEP-AC-2568, SD-CS-L38-932 | 50d | 0d | 140,612.08 | GEN |
| C-MEP-AC-3228 |  | Installation of Chilled Water Pipes & Valves at level 38 | 25d | 2016-01-23 | 2016-02-21 | C-MEP-AC-3208 SS+10d, C-MEP-AC-2348 | 95d | 0d | 30,741.92 | GEN |
| C-MEP-AC-3268 |  | Installation of HVAC equipments AHU's, FCU's, ERU's, VAV's, CAV's & Fans at level 38 | 25d | 2016-02-09 | 2016-03-09 | C-MEP-AC-3258 FF, C-MEP-AC-3248 FF, C-MEP-AC-3208 SS | 96d | 46d | 45,513.72 | GEN |
| C-MEP-AC-3248 |  | Pressure testing & Insulation of Chilled Water Pipes at level 38 | 12d | 2016-02-22 | 2016-03-06 | C-MEP-AC-3228 | 99d | 0d | 8,821.1 | GEN |
| C-MEP-AC-3258 |  | Pressure testing of Ductwork at level 38 | 8d | 2016-03-01 | 2016-03-09 | C-MEP-AC-3208, C-MEP-AC-3098 | 91d | 0d |  | GEN |
| C-MEP-AC-3238 |  | Installation of Chilled Water Pipes Control Devices & Isolator at level 38 | 8d | 2016-03-07 | 2016-03-15 | C-MEP-AC-3248 | 111d | 61d | 2,889.38 | GEN |
| C-MEP-AC-3218 |  | Installation of Silencers, Attenuators, Isolators & Detectors at level 38 | 12d | 2016-03-10 | 2016-03-23 | C-MEP-AC-3258 | 104d | 54d | 28,274.51 | GEN |
| C-MEP-AC-3278 |  | Installation of Grilles, Diffusers & Controller at level 38 | 12d | 2016-11-09 | 2016-11-22 | C-MEP-AC-3268, C-F-CF-2837, C-F-CF-2827, C-F-WF-1624 FF, C-F-CF-2827 FF, C-F-WF-1614 FF, C-MEP-AC-2638 | 71d | 0d | 55,880.87 | GEN |

Notes:
- C-ELV-SMATV-1905: Expenses: 1 4452.18
- C-ELV-SMATV-1945: Expenses: 1 2769.38
- C-ELV-SMATV-1915: Expenses: 1 10388.4
- C-ELV-SMATV-1925: Expenses: 1 6537.45
- C-ELV-SMATV-1935: Expenses: 1 2419.21
- C-MEP-BMS-1905: Expenses: 1 8895.95
- C-MEP-BMS-1915: Expenses: 1 11861.3
- C-MEP-BMS-1925: Expenses: 1 14826.6
- C-MEP-BMS-1935: Expenses: 1 14826.6
- C-MEP-E-2406: Expenses: 1 55235.7
- C-MEP-E-2456: Expenses: 1 21017.5
- C-MEP-E-2416: Expenses: 1 57962.7; 2 132566
- C-MEP-E-2426: Expenses: 1 78921.1
- C-MEP-E-2446: Expenses: 1 71857.7
- C-MEP-AC-3208: Expenses: 1 140612
- C-MEP-AC-3228: Expenses: 1 30741.9
- C-MEP-AC-3268: Expenses: 1 45513.7
- C-MEP-AC-3248: Expenses: 1 8821.1
- C-MEP-AC-3238: Expenses: 1 2889.38
- C-MEP-AC-3218: Expenses: 1 28274.5
- C-MEP-AC-3278: Expenses: 1 55880.9

| ID | WBS | Activity | Duration | Start | Finish | Predecessors | Total float | Free float | Cost | AREA |
| --- | --- | --- | --- | --- | --- | --- | --- | --- | --- | --- |
|  | 3 | **Fire Fighting** |  | 2016-01-23 | 2016-08-11 |  |  |  |  |  |
| C-MEP-FF-1604 |  | Installation of FIre fighting Pipes at level 38 | 25d | 2016-01-23 | 2016-02-21 | C-MEP-AC-3208 SS+10d, SD-CS-L38-952 | 60d | 0d | 45,406.88 | GEN |
| C-MEP-FF-1624 |  | Pressure testing of fire fighting pipes at level 38 | 8d | 2016-02-22 | 2016-03-01 | C-MEP-FF-1604 | 83d | 0d | 5,280.67 | GEN |
| C-MEP-FF-1614 |  | Installation of fire Fighting Valves at level 38 | 20d | 2016-03-02 | 2016-03-24 | C-MEP-FF-1624 | 83d | 33d | 18,427.34 | GEN |
| C-MEP-FF-1634 |  | Installation of Fire Fighting Sprinklers & Fire hose Cabinets & Extinguishers at level 38 | 14d | 2016-07-27 | 2016-08-11 | C-MEP-FF-1614, C-F-CF-2827, C-F-CF-2817, C-MEP-FF-1624 | 105d | 0d | 64,097.37 | GEN |
|  | 4 | **Plumbing & Drainage** |  | 2016-02-09 | 2016-11-16 |  |  |  |  |  |
| C-MEP-PD-2005 |  | Installation of Water Pipes & Valves (Hot & Cold atc..) at level 38 | 20d | 2016-02-09 | 2016-03-03 | C-MEP-FF-1604 SS, C-F-P-1213, SD-CS-L38-992 | 50d | 0d | 83,874.06 | GEN |
| C-MEP-PD-2015 |  | Installation drainage Pipes at level 38 | 25d | 2016-02-09 | 2016-03-09 | C-MEP-PD-2005 SS | 88d | 0d | 30,204.4 | GEN |
| C-MEP-PD-2025 |  | Pressure testing & Insullation of water pipes at level 38 | 8d | 2016-03-05 | 2016-03-13 | C-MEP-PD-2005 | 93d | 43d | 9,573.63 | GEN |
| C-MEP-PD-2035 |  | Pressure testing of drainage pipes at level 38 | 8d | 2016-03-10 | 2016-03-19 | C-MEP-PD-2015 | 88d | 38d | 1,651.42 | GEN |
| C-MEP-PD-2045 |  | Installation of Outlets, Drains, Gullies, Cowls, & Clean out at level 38 | 20d | 2016-10-25 | 2016-11-16 | C-MEP-PD-2025, C-MEP-PD-2025 FF, C-F-FF-1614, C-F-WF-1614, C-F-FF-1614 FF, C-F-WF-1634, C-F-WF-1614 FF, C-F-DW-1614, C-MEP-PD-1595, C-F-P-LSF-682 FF | 110d | 4d | 13,120.28 | GEN |
|  | 7 | **ELV systems** |  | 2016-02-09 | 2016-08-06 |  |  |  |  |  |
|  | 1 | **Room Management System** |  | 2016-02-09 | 2016-06-11 |  |  |  |  |  |
| C-ELV-RMS-2005 |  | Installation of RMS first fix (Conduits, Boxes within block work , Gypsum Boards & Raised FLooring at level 38 | 20d | 2016-02-09 | 2016-03-03 | C-F-P-1213, C-F-P-1203, SD-CS-L38-1172, C-ELV-RMS-1905 SS | 71d | 14d | 11,902.78 | GEN |
| C-ELV-RMS-2045 |  | Installation of Cable Trays & Truncking at level 38 | 25d | 2016-02-22 | 2016-03-21 | C-ELV-CS-2045 SS+5d | 50d | 0d | 2,769.38 |  |
| C-ELV-RMS-2015 |  | Installation of second fix (Cabling & Wirring etc..) at level 38 | 25d | 2016-03-22 | 2016-04-19 | C-ELV-RMS-2005, C-ELV-RMS-2045 | 56d | 0d | 11,902.78 | GEN |
| C-ELV-RMS-2025 |  | Installation & Connection of ethernets & HVAC thermostates etc.. at level 38 | 25d | 2016-04-20 | 2016-05-18 | C-ELV-RMS-2015 | 56d | 0d | 27,773.16 | GEN |
| C-ELV-RMS-2035 |  | Installtion & Connection of Panels, Controller, switches, server etc..) at level 38 | 20d | 2016-05-19 | 2016-06-11 | C-ELV-RMS-2025, C-ELV-RMS-1935 SS | 158d | 14d | 27,773.16 |  |
|  | 12 | **Fire Alarm & Detection System** |  | 2016-02-22 | 2016-07-10 |  |  |  |  |  |
| C-ELV-FA-2005 |  | Installation of FA first Fix Conduits, Boxes within block work , Gypsum Boards & Raised FLooring at level 38 | 20d | 2016-02-22 | 2016-03-15 | C-F-P-1213, C-F-P-1203, C-ELV-FA-1905 SS | 66d | 4d | 13,660.92 | GEN |
| C-ELV-FA-2045 |  | Installation of Cable Trays & Truncking at level 38 | 25d | 2016-03-05 | 2016-04-02 | C-ELV-MSPA-2045 SS+5d, SD-CS-L38-1212 | 50d | 0d | 2,769.38 |  |
| C-ELV-FA-2015 |  | Installation of second fix (Cabling & Wirring etc..) at level 38 | 20d | 2016-04-03 | 2016-04-25 | C-ELV-FA-2005, C-ELV-FA-2045 | 51d | 0d | 22,768.2 | GEN |
| C-ELV-FA-2025 |  | Installation & Connection of heat detector, smoke detector, flame detector etc.. at level 38 | 25d | 2016-04-26 | 2016-05-24 | C-ELV-FA-2015 | 51d | 1d | 27,321.84 | GEN |
| C-ELV-FA-2035 |  | Installtion & Connection of Racks & Panels at level 38 | 20d | 2016-06-14 | 2016-07-10 | C-ELV-FA-2025, C-ELV-FA-1935 SS | 156d | 0d | 27,321.84 |  |

Notes:
- C-MEP-FF-1604: Expenses: 1 45406.9
- C-MEP-FF-1624: Expenses: 1 5280.67
- C-MEP-FF-1614: Expenses: 1 18427.3
- C-MEP-FF-1634: Expenses: 1 64097.4
- C-MEP-PD-2005: Expenses: 1 83874.1
- C-MEP-PD-2015: Expenses: 1 30204.4
- C-MEP-PD-2025: Expenses: 1 9573.63
- C-MEP-PD-2035: Expenses: 1 1651.42
- C-MEP-PD-2045: Expenses: 1 13120.3
- C-ELV-RMS-2005: Expenses: 1 11902.8
- C-ELV-RMS-2045: Expenses: 1 2769.38
- C-ELV-RMS-2015: Expenses: 1 11902.8
- C-ELV-RMS-2025: Expenses: 1 27773.2
- C-ELV-RMS-2035: Expenses: 1 27773.2
- C-ELV-FA-2005: Expenses: 1 13660.9
- C-ELV-FA-2045: Expenses: 1 2769.38
- C-ELV-FA-2015: Expenses: 1 22768.2
- C-ELV-FA-2025: Expenses: 1 27321.8
- C-ELV-FA-2035: Expenses: 1 27321.8

| ID | WBS | Activity | Duration | Start | Finish | Predecessors | Total float | Free float | Cost | AREA |
| --- | --- | --- | --- | --- | --- | --- | --- | --- | --- | --- |
|  | 2 | **Music System & Public Address System** |  | 2016-02-22 | 2016-06-28 |  |  |  |  |  |
| C-ELV-MSPA-2005 |  | Installation of MS/PA first fix (Conduits, Boxes within block work, Gypsum Boards & Raised FLooring at level 38 | 20d | 2016-02-22 | 2016-03-15 | C-F-P-1213, C-F-P-1203, SD-CS-L38-1192, C-ELV-MSPA-1905 SS | 61d | 4d | 6,994.34 | GEN |
| C-ELV-MSPA-2045 |  | Installation of Cable Trays & Truncking at level 38 | 25d | 2016-02-28 | 2016-03-27 | C-ELV-RMS-2045 SS+5d | 50d | 0d | 2,769.38 |  |
| C-ELV-MSPA-2015 |  | Installation of second fix (Cabling & Wirring etc..) at level 38 | 25d | 2016-03-28 | 2016-04-25 | C-ELV-MSPA-2005, C-ELV-MSPA-2045 | 51d | 0d | 6,994.34 | GEN |
| C-ELV-MSPA-2025 |  | Installation & Connection of speakers, Amplifier & Controller at level 38 | 25d | 2016-04-26 | 2016-05-24 | C-ELV-MSPA-2015 | 51d | 1d | 16,320.12 | GEN |
| C-ELV-MSPA-2035 |  | Installtion & Connection of Media hub, panels and processor at level 38 | 20d | 2016-06-06 | 2016-06-28 | C-ELV-MSPA-2025, C-ELV-MSPA-1935 SS | 163d | 4d | 16,320.12 |  |
|  | 3 | **IP CCTV & Access Control System** |  | 2016-02-27 | 2016-07-04 |  |  |  |  |  |
| C-ELV-CCTV-2005 |  | Installation of CCTV first Fix Conduits, Boxes within block work, Gypsum Boards & Raised FLooring at level 38 | 20d | 2016-02-27 | 2016-03-20 | C-F-P-1213, C-F-P-1203, SD-CS-L38-1232, C-ELV-CCTV-1905 | 69d | 0d | 8,161.35 | GEN |
| C-ELV-CCTV-2045 |  | Installation of Cable Trays & Truncking at level 38 | 25d | 2016-03-10 | 2016-04-07 | C-ELV-FA-2045 SS+5d | 50d | 0d | 2,769.38 |  |
| C-ELV-CCTV-2015 |  | Installation of second fix (Cabling & Wirring etc..) at level 38 | 20d | 2016-04-09 | 2016-05-01 | C-ELV-CCTV-2005, C-ELV-CCTV-2045 | 53d | 0d | 19,043.14 | GEN |
| C-ELV-CCTV-2025 |  | Installation & Connection of Camera's & Alarms at level 38 | 18d | 2016-05-02 | 2016-05-22 | C-ELV-CCTV-2015 | 53d | 3d | 183,698.91 | GEN |
| C-ELV-CCTV-2035 |  | Installtion & Connection of Racks, Panels etc... at level 38 | 25d | 2016-06-06 | 2016-07-04 | C-ELV-CCTV-2025 FF, C-ELV-CCTV-1935 SS | 123d | 0d | 7,322.52 |  |
|  | 7 | **Communication System** |  | 2016-02-16 | 2016-08-06 |  |  |  |  |  |
| C-ELV-CS-2045 |  | Installation of Cable Trays & Truncking at level 38 | 18d | 2016-02-16 | 2016-03-07 | C-MEP-E-2456 SS | 50d | 0d | 2,769.38 |  |
| C-ELV-CS-2005 |  | Installation of CS first fix (Conduits, Boxes within block work, Gypsum Boards & Raised FLooring at level 38 | 20d | 2016-02-22 | 2016-03-15 | C-F-P-1213, C-F-P-1203, SD-CS-L38-1152, C-ELV-CS-1905 SS | 61d | 0d | 27,356.12 | GEN |
| C-ELV-CS-2015 |  | Installation of second fix (Cabling & Wirring etc..) at level 38 | 25d | 2016-03-16 | 2016-04-13 | C-ELV-CS-2005, C-ELV-CS-2045 | 61d | 0d | 82,068.35 | GEN |
| C-ELV-CS-2025 |  | Installation & Connection of Wireless Access points & IP dect phone & RJ 45 at level 38 | 25d | 2016-04-14 | 2016-05-12 | C-ELV-CS-2015 | 61d | 11d | 93,342.54 | GEN |
| C-ELV-CS-2035 |  | Installtion & Connection of Controller & Instrumentation at level 38 | 20d | 2016-07-14 | 2016-08-06 | C-ELV-CS-2025, C-ELV-CS-1935 SS | 137d | 0d | 223,314.69 |  |
|  | 4 | **IP, SMATV & QAM Television System** |  | 2016-02-09 | 2016-06-15 |  |  |  |  |  |
| C-ELV-SMATV-2005 |  | Installation of SMATV first Fix Conduits, Boxes within block work , Gypsum Boards & Raised FLooring at level 38 | 20d | 2016-02-09 | 2016-03-03 | C-F-P-1213, C-F-P-1203, SD-CS-L38-1252, C-ELV-SMATV-1905 SS | 68d | 14d | 4,452.18 | GEN |
| C-ELV-SMATV-2045 |  | Installation of Cable Trays & Truncking at level 38 | 25d | 2016-03-16 | 2016-04-13 | C-ELV-CCTV-2045 SS+5d | 50d | 0d | 2,769.38 |  |
| C-ELV-SMATV-2015 |  | Installation of second fix (Cabling & Wirring etc..) at level 38 | 16d | 2016-04-14 | 2016-05-02 | C-ELV-SMATV-2005, C-ELV-SMATV-2045 | 52d | 0d | 10,388.41 | GEN |
| C-ELV-SMATV-2025 |  | Installation & Connection of Outlets, switches and splitter at level 38 | 18d | 2016-05-03 | 2016-05-23 | C-ELV-SMATV-2015 | 52d | 0d | 6,537.45 | GEN |
| C-ELV-SMATV-2035 |  | Installtion & Connection of SMATV & QAM fiber & receiver at level 38 | 20d | 2016-05-24 | 2016-06-15 | C-ELV-SMATV-2025, C-ELV-SMATV-1935 SS | 154d | 0d | 2,419.21 |  |

Notes:
- C-ELV-MSPA-2005: Expenses: 1 6994.34
- C-ELV-MSPA-2045: Expenses: 1 2769.38
- C-ELV-MSPA-2015: Expenses: 1 6994.34
- C-ELV-MSPA-2025: Expenses: 1 16320.1
- C-ELV-MSPA-2035: Expenses: 1 16320.1
- C-ELV-CCTV-2005: Expenses: 1 8161.35
- C-ELV-CCTV-2045: Expenses: 1 2769.38
- C-ELV-CCTV-2015: Expenses: 1 19043.1
- C-ELV-CCTV-2025: Expenses: 1 183699
- C-ELV-CCTV-2035: Expenses: 1 7322.52
- C-ELV-CS-2045: Expenses: 1 2769.38
- C-ELV-CS-2005: Expenses: 1 27356.1
- C-ELV-CS-2015: Expenses: 1 82068.4
- C-ELV-CS-2025: Expenses: 1 93342.5
- C-ELV-CS-2035: Expenses: 1 223315
- C-ELV-SMATV-2005: Expenses: 1 4452.18
- C-ELV-SMATV-2045: Expenses: 1 2769.38
- C-ELV-SMATV-2015: Expenses: 1 10388.4
- C-ELV-SMATV-2025: Expenses: 1 6537.45
- C-ELV-SMATV-2035: Expenses: 1 2419.21

| ID | WBS | Activity | Duration | Start | Finish | Predecessors | Total float | Free float | Cost | AREA |
| --- | --- | --- | --- | --- | --- | --- | --- | --- | --- | --- |
|  | 5 | **BMS system** |  | 2016-02-27 | 2016-06-18 |  |  |  |  |  |
| C-MEP-BMS-2005 |  | Installation of BMS first Fix Conduits, Boxes within block work , Gypsum Boards & Raised FLooring at level 38 | 20d | 2016-02-27 | 2016-03-20 | C-F-P-1213, C-F-P-1203, SD-CS-L38-1132, C-MEP-BMS-1905 | 71d | 0d | 8,895.95 | GEN |
| C-MEP-BMS-2045 |  | Installation of Cable trays & Trunking at level 38 | 20d | 2016-03-22 | 2016-04-13 | C-ELV-SMATV-2045 SS+5d | 50d | 0d |  |  |
| C-MEP-BMS-2015 |  | Installation of BMS Cabling & Wirring at level 38 | 16d | 2016-04-14 | 2016-05-02 | C-MEP-BMS-2005, C-MEP-BMS-2045 | 50d | 0d | 11,861.27 | GEN |
| C-MEP-BMS-2025 |  | Installation & Connection of BMS Sensors, Relays, & Valves at level 38 | 20d | 2016-05-03 | 2016-05-25 | C-MEP-BMS-2015, C-MEP-PD-2035, C-MEP-PD-2025, C-MEP-FF-1614, C-MEP-AC-3268, C-MEP-AC-3248, C-MEP-AC-3258 | 50d | 0d | 14,826.58 | GEN |
| C-MEP-BMS-2035 |  | Installtion & Connection of BMS Racks, Panels etc... at level 38 | 20d | 2016-05-26 | 2016-06-18 | C-MEP-BMS-2025, C-MEP-BMS-1935 SS | 162d | 0d | 14,826.58 |  |
|  | 40 | **MEP - Level 39** |  | 2016-01-27 | 2016-12-26 |  |  |  |  |  |
|  | 1 | **Electrical** |  | 2016-02-14 | 2016-12-26 |  |  |  |  |  |
| C-MEP-E-2106 |  | Installation of first Electrical Fix Conduits, Boxes within block work & Gypsum Boards at level 39 | 20d | 2016-02-14 | 2016-03-07 | C-F-P-1053, C-MEP-E-1866 | 46d | 11d | 55,235.7 | GEN |
| C-MEP-E-2156 |  | Installation of Cable Trays & Truncking at level 39 | 18d | 2016-03-03 | 2016-03-23 | C-MEP-FF-1404 SS+10d, C-MEP-PD-1755 SS+5d, C-MEP-E-1916 | 34d | 0d | 21,017.55 |  |
| C-MEP-E-2116 |  | Installation of Electrical Second Fix (Cabling & Wirring etc..). at level 39 | 18d | 2016-03-24 | 2016-04-13 | C-MEP-E-2106, C-MEP-E-2156, C-MEP-E-1876 | 34d | 0d | 190,528.33 | GEN |
| C-MEP-E-2126 |  | Installation & Connection of Electrical DB's, SMDB's at level 39 | 16d | 2016-04-14 | 2016-05-02 | C-MEP-E-2116, C-MEP-E-2546 SS | 36d | 0d | 78,921.15 | GEN |
| C-MEP-E-2146 |  | Installation & Connection of Lighting Fixtures & Sockets at level 39 | 14d | 2016-12-10 | 2016-12-26 | C-MEP-E-2116, C-F-CF-2487, C-F-CF-2477, C-F-WF-1414, C-F-WF-1424, C-MEP-E-2086, C-F-P-LSF-692 FF | 77d | 0d | 71,857.69 | GEN |
|  | 2 | **HVAC** |  | 2016-01-27 | 2016-12-08 |  |  |  |  |  |
| C-MEP-AC-2808 |  | Installation of Ductwork, Insulation & Dampers at level 39 | 23d | 2016-01-27 | 2016-02-23 | C-F-P-1053 SS, C-MEP-AC-2728, SD-CS-L39-952 | 25d | 0d | 140,612.08 | GEN |
| C-MEP-AC-2828 |  | Installation of Chilled Water Pipes & Valves at level 39 | 25d | 2016-02-08 | 2016-03-08 | C-MEP-AC-2808 SS+10d, C-MEP-AC-2668 | 87d | 0d | 30,741.92 | GEN |
| C-MEP-AC-2868 |  | Installation of HVAC equipments AHU's, FCU's, ERU's, VAV's, CAV's & Fans at level 39 | 25d | 2016-02-23 | 2016-03-22 | C-MEP-AC-2858 FF, C-MEP-AC-2848 FF, C-MEP-AC-2808 SS | 88d | 49d | 45,513.72 | GEN |
| C-MEP-AC-2848 |  | Pressure testing & Insulation of Chilled Water Pipes at level 39 | 12d | 2016-03-09 | 2016-03-22 | C-MEP-AC-2828 | 88d | 0d | 8,821.1 | GEN |
| C-MEP-AC-2858 |  | Pressure testing of Ductwork at level 39 | 8d | 2016-03-10 | 2016-03-19 | C-MEP-AC-2808, C-MEP-AC-3258 | 91d | 0d |  | GEN |
| C-MEP-AC-2818 |  | Installation of Silencers, Attenuators, Isolators & Detectors at level 39 | 12d | 2016-03-20 | 2016-04-02 | C-MEP-AC-2858 | 99d | 60d | 28,274.51 | GEN |
| C-MEP-AC-2838 |  | Installation of Chilled Water Pipes Control Devices & Isolator at level 39 | 8d | 2016-03-23 | 2016-03-31 | C-MEP-AC-2848 | 100d | 61d | 2,889.38 | GEN |
| C-MEP-AC-2878 |  | Installation of Grilles, Diffusers & Controller at level 39 | 12d | 2016-11-26 | 2016-12-08 | C-MEP-AC-2868, C-F-CF-2487, C-F-CF-2477, C-F-WF-1424 FF, C-F-CF-2477 FF, C-F-WF-1414 FF, C-MEP-AC-2798 | 57d | 0d | 55,880.87 | GEN |
|  | 3 | **Fire Fighting** |  | 2016-02-08 | 2016-08-28 |  |  |  |  |  |
| C-MEP-FF-1404 |  | Installation of FIre fighting Pipes at level 39 | 25d | 2016-02-08 | 2016-03-08 | C-MEP-AC-2808 SS+10d, SD-CS-L39-972 | 44d | 0d | 45,406.88 | GEN |
| C-MEP-FF-1424 |  | Pressure testing of fire fighting pipes at level 39 | 8d | 2016-03-09 | 2016-03-17 | C-MEP-FF-1404 | 72d | 0d | 5,280.67 | GEN |
| C-MEP-FF-1414 |  | Installation of fire Fighting Valves at level 39 | 20d | 2016-03-19 | 2016-04-10 | C-MEP-FF-1424 | 72d | 33d | 18,427.34 | GEN |
| C-MEP-FF-1434 |  | Installation of Fire Fighting Sprinklers & Fire hose Cabinets & Extinguishers at level 39 | 14d | 2016-08-13 | 2016-08-28 | C-MEP-FF-1414, C-F-CF-2477, C-F-CF-2467, C-MEP-FF-1424 | 91d | 0d | 64,097.37 | GEN |

Notes:
- C-MEP-BMS-2005: Expenses: 1 8895.95
- C-MEP-BMS-2015: Expenses: 1 11861.3
- C-MEP-BMS-2025: Expenses: 1 14826.6
- C-MEP-BMS-2035: Expenses: 1 14826.6
- C-MEP-E-2106: Expenses: 1 55235.7
- C-MEP-E-2156: Expenses: 1 21017.5
- C-MEP-E-2116: Expenses: 1 57962.7; 2 132566
- C-MEP-E-2126: Expenses: 1 78921.1
- C-MEP-E-2146: Expenses: 1 71857.7
- C-MEP-AC-2808: Expenses: 1 140612
- C-MEP-AC-2828: Expenses: 1 30741.9
- C-MEP-AC-2868: Expenses: 1 45513.7
- C-MEP-AC-2848: Expenses: 1 8821.1
- C-MEP-AC-2818: Expenses: 1 28274.5
- C-MEP-AC-2838: Expenses: 1 2889.38
- C-MEP-AC-2878: Expenses: 1 55880.9
- C-MEP-FF-1404: Expenses: 1 45406.9
- C-MEP-FF-1424: Expenses: 1 5280.67
- C-MEP-FF-1414: Expenses: 1 18427.3
- C-MEP-FF-1434: Expenses: 1 64097.4

| ID | WBS | Activity | Duration | Start | Finish | Predecessors | Total float | Free float | Cost | AREA |
| --- | --- | --- | --- | --- | --- | --- | --- | --- | --- | --- |
|  | 4 | **Plumbing & Drainage** |  | 2016-02-27 | 2016-12-03 |  |  |  |  |  |
| C-MEP-PD-1755 |  | Installation of Water Pipes & Valves (Hot & Cold atc..) at level 39 | 20d | 2016-02-27 | 2016-03-20 | C-MEP-FF-1404 SS, C-F-P-1063, SD-CS-L39-1012 | 34d | 0d | 83,874.06 | GEN |
| C-MEP-PD-1765 |  | Installation drainage Pipes at level 39 | 25d | 2016-02-27 | 2016-03-26 | C-MEP-PD-1755 SS | 77d | 0d | 30,204.4 | GEN |
| C-MEP-PD-1775 |  | Pressure testing & Insullation of water pipes at level 39 | 8d | 2016-03-21 | 2016-03-29 | C-MEP-PD-1755 | 82d | 43d | 9,573.63 | GEN |
| C-MEP-PD-1785 |  | Pressure testing of drainage pipes at level 39 | 8d | 2016-03-27 | 2016-04-04 | C-MEP-PD-1765 | 77d | 38d | 1,651.42 | GEN |
| C-MEP-PD-1795 |  | Installation of Outlets, Drains, Gullies, Cowls, & Clean out at level 39 | 20d | 2016-11-10 | 2016-12-03 | C-MEP-PD-1775, C-MEP-PD-1775 FF, C-F-FF-1414, C-F-WF-1414, C-F-FF-1414 FF, C-F-WF-1434, C-F-WF-1414 FF, C-F-DW-1414, C-MEP-PD-1645, C-F-P-LSF-692 FF | 96d | 0d | 13,120.28 | GEN |
|  | 7 | **ELV systems** |  | 2016-02-27 | 2016-08-06 |  |  |  |  |  |
|  | 1 | **Room Management System** |  | 2016-02-27 | 2016-06-27 |  |  |  |  |  |
| C-ELV-RMS-1755 |  | Installation of RMS first fix (Conduits, Boxes within block work , Gypsum Boards & Raised FLooring at level 39 | 20d | 2016-02-27 | 2016-03-20 | C-F-P-1063, C-F-P-1053, SD-CS-L39-1192, C-ELV-RMS-2005 SS | 58d | 0d | 11,902.78 | GEN |
| C-ELV-RMS-1795 |  | Installation of Cable Trays & Truncking at level 39 | 25d | 2016-03-09 | 2016-04-06 | C-ELV-CS-1795 SS+5d | 39d | 0d | 2,769.38 |  |
| C-ELV-RMS-1765 |  | Installation of second fix (Cabling & Wirring etc..) at level 39 | 25d | 2016-04-07 | 2016-05-05 | C-ELV-RMS-1755, C-ELV-RMS-1795 | 45d | 0d | 11,902.78 | GEN |
| C-ELV-RMS-1775 |  | Installation & Connection of ethernets & HVAC thermostates etc.. at level 39 | 25d | 2016-05-07 | 2016-06-04 | C-ELV-RMS-1765 | 45d | 0d | 27,773.16 | GEN |
| C-ELV-RMS-1785 |  | Installtion & Connection of Panels, Controller, switches, server etc..) at level 39 | 20d | 2016-06-05 | 2016-06-27 | C-ELV-RMS-1775, C-ELV-RMS-2035 SS | 144d | 0d | 27,773.16 |  |
|  | 12 | **Fire Alarm & Detection System** |  | 2016-02-27 | 2016-07-10 |  |  |  |  |  |
| C-ELV-FA-1755 |  | Installation of FA first Fix Conduits, Boxes within block work , Gypsum Boards & Raised FLooring at level 39 | 20d | 2016-02-27 | 2016-03-20 | C-F-P-1063, C-F-P-1053, C-ELV-FA-2005 SS | 62d | 0d | 13,660.92 | GEN |
| C-ELV-FA-1795 |  | Installation of Cable Trays & Truncking at level 39 | 25d | 2016-03-21 | 2016-04-18 | C-ELV-MSPA-1795 SS+5d, SD-CS-L39-1232 | 39d | 0d | 2,769.38 |  |
| C-ELV-FA-1765 |  | Installation of second fix (Cabling & Wirring etc..) at level 39 | 20d | 2016-04-19 | 2016-05-11 | C-ELV-FA-1755, C-ELV-FA-1795 | 40d | 0d | 22,768.2 | GEN |
| C-ELV-FA-1775 |  | Installation & Connection of heat detector, smoke detector, flame detector etc.. at level 39 | 25d | 2016-05-12 | 2016-06-09 | C-ELV-FA-1765 | 40d | 1d | 27,321.84 | GEN |
| C-ELV-FA-1785 |  | Installtion & Connection of Racks & Panels at level 39 | 20d | 2016-06-14 | 2016-07-10 | C-ELV-FA-1775, C-ELV-FA-2035 SS | 156d | 0d | 27,321.84 |  |
|  | 2 | **Music System & Public Address System** |  | 2016-02-27 | 2016-07-03 |  |  |  |  |  |
| C-ELV-MSPA-1755 |  | Installation of MS/PA first fix (Conduits, Boxes within block work, Gypsum Boards & Raised FLooring at level 39 | 20d | 2016-02-27 | 2016-03-20 | C-F-P-1063, C-F-P-1053, SD-CS-L39-1212, C-ELV-MSPA-2005 SS | 58d | 0d | 6,994.34 | GEN |
| C-ELV-MSPA-1795 |  | Installation of Cable Trays & Truncking at level 39 | 25d | 2016-03-15 | 2016-04-12 | C-ELV-RMS-1795 SS+5d | 39d | 0d | 2,769.38 |  |
| C-ELV-MSPA-1765 |  | Installation of second fix (Cabling & Wirring etc..) at level 39 | 25d | 2016-04-13 | 2016-05-11 | C-ELV-MSPA-1755, C-ELV-MSPA-1795 | 40d | 0d | 6,994.34 | GEN |
| C-ELV-MSPA-1775 |  | Installation & Connection of speakers, Amplifier & Controller at level 39 | 25d | 2016-05-12 | 2016-06-09 | C-ELV-MSPA-1765 | 40d | 0d | 16,320.12 | GEN |
| C-ELV-MSPA-1785 |  | Installtion & Connection of Media hub, panels and processor at level 39 | 20d | 2016-06-11 | 2016-07-03 | C-ELV-MSPA-1775, C-ELV-MSPA-2035 SS | 159d | 0d | 16,320.12 |  |

Notes:
- C-MEP-PD-1755: Expenses: 1 83874.1
- C-MEP-PD-1765: Expenses: 1 30204.4
- C-MEP-PD-1775: Expenses: 1 9573.63
- C-MEP-PD-1785: Expenses: 1 1651.42
- C-MEP-PD-1795: Expenses: 1 13120.3
- C-ELV-RMS-1755: Expenses: 1 11902.8
- C-ELV-RMS-1795: Expenses: 1 2769.38
- C-ELV-RMS-1765: Expenses: 1 11902.8
- C-ELV-RMS-1775: Expenses: 1 27773.2
- C-ELV-RMS-1785: Expenses: 1 27773.2
- C-ELV-FA-1755: Expenses: 1 13660.9
- C-ELV-FA-1795: Expenses: 1 2769.38
- C-ELV-FA-1765: Expenses: 1 22768.2
- C-ELV-FA-1775: Expenses: 1 27321.8
- C-ELV-FA-1785: Expenses: 1 27321.8
- C-ELV-MSPA-1755: Expenses: 1 6994.34
- C-ELV-MSPA-1795: Expenses: 1 2769.38
- C-ELV-MSPA-1765: Expenses: 1 6994.34
- C-ELV-MSPA-1775: Expenses: 1 16320.1
- C-ELV-MSPA-1785: Expenses: 1 16320.1

| ID | WBS | Activity | Duration | Start | Finish | Predecessors | Total float | Free float | Cost | AREA |
| --- | --- | --- | --- | --- | --- | --- | --- | --- | --- | --- |
|  | 3 | **IP CCTV & Access Control System** |  | 2016-02-27 | 2016-08-06 |  |  |  |  |  |
| C-ELV-CCTV-1755 |  | Installation of CCTV first Fix Conduits, Boxes within block work, Gypsum Boards & Raised FLooring at level 39 | 20d | 2016-02-27 | 2016-03-20 | C-F-P-1063, C-F-P-1053, SD-CS-L39-1252, C-ELV-CCTV-2005 SS | 69d | 0d | 8,161.35 | GEN |
| C-ELV-CCTV-1795 |  | Installation of Cable Trays & Truncking at level 39 | 25d | 2016-03-27 | 2016-04-24 | C-ELV-FA-1795 SS+5d | 39d | 0d | 2,769.38 |  |
| C-ELV-CCTV-1765 |  | Installation of second fix (Cabling & Wirring etc..) at level 39 | 20d | 2016-04-25 | 2016-05-17 | C-ELV-CCTV-1755, C-ELV-CCTV-1795 | 42d | 0d | 19,043.14 | GEN |
| C-ELV-CCTV-1775 |  | Installation & Connection of Camera's & Alarms at level 39 | 18d | 2016-05-18 | 2016-06-07 | C-ELV-CCTV-1765 | 42d | 3d | 183,698.91 | GEN |
| C-ELV-CCTV-1785 |  | Installtion & Connection of Racks, Panels etc... at level 39 | 25d | 2016-07-09 | 2016-08-06 | C-ELV-CCTV-1775 FF, C-ELV-CCTV-2035 | 123d | 0d | 7,322.52 |  |
|  | 7 | **Communication System** |  | 2016-02-27 | 2016-08-06 |  |  |  |  |  |
| C-ELV-CS-1755 |  | Installation of CS first fix (Conduits, Boxes within block work, Gypsum Boards & Raised FLooring at level 39 | 20d | 2016-02-27 | 2016-03-20 | C-F-P-1063, C-F-P-1053, SD-CS-L39-1172, C-ELV-CS-2005 SS | 58d | 0d | 27,356.12 | GEN |
| C-ELV-CS-1795 |  | Installation of Cable Trays & Truncking at level 39 | 18d | 2016-03-03 | 2016-03-23 | C-MEP-E-2156 SS | 39d | 0d | 2,769.38 |  |
| C-ELV-CS-1765 |  | Installation of second fix (Cabling & Wirring etc..) at level 39 | 25d | 2016-03-24 | 2016-04-21 | C-ELV-CS-1755, C-ELV-CS-1795 | 57d | 0d | 82,068.35 | GEN |
| C-ELV-CS-1775 |  | Installation & Connection of Wireless Access points & IP dect phone & RJ 45 at level 39 | 25d | 2016-04-23 | 2016-05-21 | C-ELV-CS-1765 | 57d | 18d | 93,342.54 | GEN |
| C-ELV-CS-1785 |  | Installtion & Connection of Controller & Instrumentation at level 39 | 20d | 2016-07-14 | 2016-08-06 | C-ELV-CS-1775, C-ELV-CS-2035 SS | 137d | 0d | 223,314.69 |  |
|  | 4 | **IP, SMATV & QAM Television System** |  | 2016-02-27 | 2016-07-12 |  |  |  |  |  |
| C-ELV-SMATV-1755 |  | Installation of SMATV first Fix Conduits, Boxes within block work , Gypsum Boards & Raised FLooring at level 39 | 20d | 2016-02-27 | 2016-03-20 | C-F-P-1063, C-F-P-1053, SD-CS-L39-1272, C-ELV-SMATV-2005 SS | 54d | 0d | 4,452.18 | GEN |
| C-ELV-SMATV-1795 |  | Installation of Cable Trays & Truncking at level 39 | 25d | 2016-04-02 | 2016-04-30 | C-ELV-CCTV-1795 SS+5d | 39d | 0d | 2,769.38 |  |
| C-ELV-SMATV-1765 |  | Installation of second fix (Cabling & Wirring etc..) at level 39 | 16d | 2016-05-01 | 2016-05-18 | C-ELV-SMATV-1755, C-ELV-SMATV-1795 | 41d | 0d | 10,388.41 | GEN |
| C-ELV-SMATV-1775 |  | Installation & Connection of Outlets, switches and splitter at level 39 | 18d | 2016-05-19 | 2016-06-08 | C-ELV-SMATV-1765 | 41d | 2d | 6,537.45 | GEN |
| C-ELV-SMATV-1785 |  | Installtion & Connection of SMATV & QAM fiber & receiver at level 39 | 20d | 2016-06-16 | 2016-07-12 | C-ELV-SMATV-1775, C-ELV-SMATV-2035 | 154d | 0d | 2,419.21 |  |
|  | 5 | **BMS system** |  | 2016-02-27 | 2016-07-14 |  |  |  |  |  |
| C-MEP-BMS-1755 |  | Installation of BMS first Fix Conduits, Boxes within block work , Gypsum Boards & Raised FLooring at level 39 | 20d | 2016-02-27 | 2016-03-20 | C-F-P-1063, C-F-P-1053, SD-CS-L39-1152, C-MEP-BMS-2005 SS | 72d | 0d | 8,895.95 | GEN |
| C-MEP-BMS-1795 |  | Installation of Cable trays & Trunking at level 39 | 20d | 2016-04-07 | 2016-04-30 | C-ELV-SMATV-1795 SS+5d | 39d | 0d |  |  |
| C-MEP-BMS-1765 |  | Installation of BMS Cabling & Wirring at level 39 | 16d | 2016-05-01 | 2016-05-18 | C-MEP-BMS-1755, C-MEP-BMS-1795 | 39d | 0d | 11,861.27 | GEN |
| C-MEP-BMS-1775 |  | Installation & Connection of BMS Sensors, Relays, & Valves at level 39 | 20d | 2016-05-19 | 2016-06-11 | C-MEP-BMS-1765, C-MEP-PD-1785, C-MEP-PD-1775, C-MEP-FF-1414, C-MEP-AC-2868, C-MEP-AC-2848, C-MEP-AC-2858 | 39d | 0d | 14,826.58 | GEN |
| C-MEP-BMS-1785 |  | Installtion & Connection of BMS Racks, Panels etc... at level 39 | 20d | 2016-06-19 | 2016-07-14 | C-MEP-BMS-1775, C-MEP-BMS-2035 | 162d | 0d | 14,826.58 |  |

Notes:
- C-ELV-CCTV-1755: Expenses: 1 8161.35
- C-ELV-CCTV-1795: Expenses: 1 2769.38
- C-ELV-CCTV-1765: Expenses: 1 19043.1
- C-ELV-CCTV-1775: Expenses: 1 183699
- C-ELV-CCTV-1785: Expenses: 1 7322.52
- C-ELV-CS-1755: Expenses: 1 27356.1
- C-ELV-CS-1795: Expenses: 1 2769.38
- C-ELV-CS-1765: Expenses: 1 82068.4
- C-ELV-CS-1775: Expenses: 1 93342.5
- C-ELV-CS-1785: Expenses: 1 223315
- C-ELV-SMATV-1755: Expenses: 1 4452.18
- C-ELV-SMATV-1795: Expenses: 1 2769.38
- C-ELV-SMATV-1765: Expenses: 1 10388.4
- C-ELV-SMATV-1775: Expenses: 1 6537.45
- C-ELV-SMATV-1785: Expenses: 1 2419.21
- C-MEP-BMS-1755: Expenses: 1 8895.95
- C-MEP-BMS-1765: Expenses: 1 11861.3
- C-MEP-BMS-1775: Expenses: 1 14826.6
- C-MEP-BMS-1785: Expenses: 1 14826.6

| ID | WBS | Activity | Duration | Start | Finish | Predecessors | Total float | Free float | Cost | AREA |
| --- | --- | --- | --- | --- | --- | --- | --- | --- | --- | --- |
|  | 39 | **MEP - Level 40** |  | 2016-01-27 | 2016-12-14 |  |  |  |  |  |
|  | 1 | **Electrical** |  | 2016-02-14 | 2016-12-14 |  |  |  |  |  |
| C-MEP-E-2346 |  | Installation of first Electrical Fix Conduits, Boxes within block work & Gypsum Boards at level 40 | 20d | 2016-02-14 | 2016-03-07 | C-F-P-1173, C-MEP-E-1926 | 46d | 11d | 55,235.7 | GEN |
| C-MEP-E-2396 |  | Installation of Cable Trays & Truncking at level 40 | 18d | 2016-03-03 | 2016-03-23 | C-MEP-FF-1564 SS+10d, C-MEP-PD-1955 SS+5d, C-MEP-E-1976 | 34d | 0d | 21,017.55 |  |
| C-MEP-E-2356 |  | Installation of Electrical Second Fix (Cabling & Wirring etc..). at level 40 | 18d | 2016-03-24 | 2016-04-13 | C-MEP-E-2346, C-MEP-E-2396, C-MEP-E-1936 | 34d | 0d | 190,528.33 | GEN |
| C-MEP-E-2366 |  | Installation & Connection of Electrical DB's, SMDB's at level 40 | 16d | 2016-04-14 | 2016-05-02 | C-MEP-E-2356, C-MEP-E-2246 SS | 52d | 0d | 78,921.15 | GEN |
| C-MEP-E-2386 |  | Installation & Connection of Lighting Fixtures & Sockets at level 40 | 14d | 2016-11-29 | 2016-12-14 | C-MEP-E-2356, C-F-CF-2767, C-F-CF-2757, C-F-WF-1574, C-F-WF-1584, C-MEP-E-2206, C-F-P-LSF-702 FF | 90d | 6d | 71,857.69 | GEN |
|  | 2 | **HVAC** |  | 2016-01-27 | 2016-11-09 |  |  |  |  |  |
| C-MEP-AC-3128 |  | Installation of Ductwork, Insulation & Dampers at level 40 | 23d | 2016-01-27 | 2016-02-23 | C-F-P-1173 SS, C-MEP-AC-2888, SD-CS-L40-972 | 44d | 0d | 140,612.08 | GEN |
| C-MEP-AC-3148 |  | Installation of Chilled Water Pipes & Valves at level 40 | 25d | 2016-02-08 | 2016-03-08 | C-MEP-AC-3128 SS+10d, C-MEP-AC-2508 | 86d | 0d | 30,741.92 | GEN |
| C-MEP-AC-3188 |  | Installation of HVAC equipments AHU's, FCU's, ERU's, VAV's, CAV's & Fans at level 40 | 25d | 2016-02-23 | 2016-03-22 | C-MEP-AC-3178 FF, C-MEP-AC-3168 FF, C-MEP-AC-3128 SS | 86d | 49d | 44,201.57 | GEN |
| C-MEP-AC-3178 |  | Pressure testing of Ductwork at level 40 | 8d | 2016-02-24 | 2016-03-03 | C-MEP-AC-3128 | 64d | 0d |  | GEN |
| C-MEP-AC-3138 |  | Installation of Silencers, Attenuators, Isolators & Detectors at level 40 | 12d | 2016-03-05 | 2016-03-17 | C-MEP-AC-3178 | 110d | 73d | 28,274.51 | GEN |
| C-MEP-AC-3168 |  | Pressure testing & Insulation of Chilled Water Pipes at level 40 | 12d | 2016-03-09 | 2016-03-22 | C-MEP-AC-3148 | 86d | 0d | 8,821.1 | GEN |
| C-MEP-AC-3158 |  | Installation of Chilled Water Pipes Control Devices & Isolator at level 40 | 8d | 2016-03-23 | 2016-03-31 | C-MEP-AC-3168 | 98d | 61d | 2,889.38 | GEN |
| C-MEP-AC-3198 |  | Installation of Grilles, Diffusers & Controller at level 40 | 12d | 2016-10-27 | 2016-11-09 | C-MEP-AC-3188, C-F-CF-2767, C-F-CF-2757, C-F-WF-1584 FF, C-F-CF-2757 FF, C-F-WF-1574 FF, C-MEP-AC-2958 | 94d | 24d | 55,880.87 | GEN |
|  | 3 | **Fire Fighting** |  | 2016-02-08 | 2016-07-30 |  |  |  |  |  |
| C-MEP-FF-1564 |  | Installation of FIre fighting Pipes at level 40 | 25d | 2016-02-08 | 2016-03-08 | C-MEP-AC-3128 SS+10d, SD-CS-L40-992 | 44d | 0d | 45,406.88 | GEN |
| C-MEP-FF-1584 |  | Pressure testing of fire fighting pipes at level 40 | 8d | 2016-03-09 | 2016-03-17 | C-MEP-FF-1564 | 70d | 0d | 5,280.67 | GEN |
| C-MEP-FF-1574 |  | Installation of fire Fighting Valves at level 40 | 20d | 2016-03-19 | 2016-04-10 | C-MEP-FF-1584 | 70d | 33d | 18,427.34 | GEN |
| C-MEP-FF-1594 |  | Installation of Fire Fighting Sprinklers & Fire hose Cabinets & Extinguishers at level 40 | 14d | 2016-07-14 | 2016-07-30 | C-MEP-FF-1574, C-F-CF-2757, C-F-CF-2747, C-MEP-FF-1584 | 106d | 0d | 64,097.37 | GEN |
|  | 4 | **Plumbing & Drainage** |  | 2016-02-27 | 2016-11-22 |  |  |  |  |  |
| C-MEP-PD-1955 |  | Installation of Water Pipes & Valves (Hot & Cold atc..) at level 40 | 20d | 2016-02-27 | 2016-03-20 | C-MEP-FF-1564 SS, C-F-P-1183, SD-CS-L40-1032 | 34d | 0d | 83,874.06 | GEN |
| C-MEP-PD-1965 |  | Installation drainage Pipes at level 40 | 25d | 2016-02-27 | 2016-03-26 | C-MEP-PD-1955 SS | 75d | 0d | 30,204.4 | GEN |
| C-MEP-PD-1975 |  | Pressure testing & Insullation of water pipes at level 40 | 8d | 2016-03-21 | 2016-03-29 | C-MEP-PD-1955 | 80d | 43d | 9,573.63 | GEN |
| C-MEP-PD-1985 |  | Pressure testing of drainage pipes at level 40 | 8d | 2016-03-27 | 2016-04-04 | C-MEP-PD-1965 | 75d | 38d | 1,651.42 | GEN |
| C-MEP-PD-1995 |  | Installation of Outlets, Drains, Gullies, Cowls, & Clean out at level 40 | 20d | 2016-10-31 | 2016-11-22 | C-MEP-PD-1975, C-MEP-PD-1975 FF, C-F-FF-1574, C-F-WF-1574, C-F-FF-1574 FF, C-F-WF-1594, C-F-WF-1574 FF, C-F-DW-1574, C-MEP-PD-1745, C-F-P-LSF-702 FF | 115d | 4d | 13,120.28 | GEN |

Notes:
- C-MEP-E-2346: Expenses: 1 55235.7
- C-MEP-E-2396: Expenses: 1 21017.5
- C-MEP-E-2356: Expenses: 1 57962.7; 2 132566
- C-MEP-E-2366: Expenses: 1 78921.1
- C-MEP-E-2386: Expenses: 1 71857.7
- C-MEP-AC-3128: Expenses: 1 140612
- C-MEP-AC-3148: Expenses: 1 30741.9
- C-MEP-AC-3188: Expenses: 1 44201.6
- C-MEP-AC-3138: Expenses: 1 28274.5
- C-MEP-AC-3168: Expenses: 1 8821.1
- C-MEP-AC-3158: Expenses: 1 2889.38
- C-MEP-AC-3198: Expenses: 1 55880.9
- C-MEP-FF-1564: Expenses: 1 45406.9
- C-MEP-FF-1584: Expenses: 1 5280.67
- C-MEP-FF-1574: Expenses: 1 18427.3
- C-MEP-FF-1594: Expenses: 1 64097.4
- C-MEP-PD-1955: Expenses: 1 83874.1
- C-MEP-PD-1965: Expenses: 1 30204.4
- C-MEP-PD-1975: Expenses: 1 9573.63
- C-MEP-PD-1985: Expenses: 1 1651.42
- C-MEP-PD-1995: Expenses: 1 13120.3

| ID | WBS | Activity | Duration | Start | Finish | Predecessors | Total float | Free float | Cost | AREA |
| --- | --- | --- | --- | --- | --- | --- | --- | --- | --- | --- |
|  | 7 | **ELV systems** |  | 2016-02-27 | 2016-08-06 |  |  |  |  |  |
|  | 1 | **Room Management System** |  | 2016-02-27 | 2016-07-24 |  |  |  |  |  |
| C-ELV-RMS-1955 |  | Installation of RMS first fix (Conduits, Boxes within block work , Gypsum Boards & Raised FLooring at level 40 | 20d | 2016-02-27 | 2016-03-20 | C-F-P-1183, C-F-P-1173, SD-CS-L40-1212, C-ELV-RMS-1755 SS | 58d | 0d | 11,902.78 | GEN |
| C-ELV-RMS-1995 |  | Installation of Cable Trays & Truncking at level 40 | 25d | 2016-03-09 | 2016-04-06 | C-ELV-CS-1995 SS+5d | 37d | 0d | 2,769.38 |  |
| C-ELV-RMS-1965 |  | Installation of second fix (Cabling & Wirring etc..) at level 40 | 25d | 2016-04-07 | 2016-05-05 | C-ELV-RMS-1955, C-ELV-RMS-1995 | 43d | 0d | 11,902.78 | GEN |
| C-ELV-RMS-1975 |  | Installation & Connection of ethernets & HVAC thermostates etc.. at level 40 | 25d | 2016-05-07 | 2016-06-04 | C-ELV-RMS-1965 | 43d | 6d | 27,773.16 | GEN |
| C-ELV-RMS-1985 |  | Installtion & Connection of Panels, Controller, switches, server etc..) at level 40 | 20d | 2016-06-28 | 2016-07-24 | C-ELV-RMS-1975, C-ELV-RMS-1785 | 144d | 0d | 27,773.16 |  |
|  | 12 | **Fire Alarm & Detection System** |  | 2016-02-27 | 2016-07-10 |  |  |  |  |  |
| C-ELV-FA-1955 |  | Installation of FA first Fix Conduits, Boxes within block work , Gypsum Boards & Raised FLooring at level 40 | 20d | 2016-02-27 | 2016-03-20 | C-F-P-1183, C-F-P-1173, C-ELV-FA-1755 SS | 62d | 0d | 13,660.92 | GEN |
| C-ELV-FA-1995 |  | Installation of Cable Trays & Truncking at level 40 | 25d | 2016-03-21 | 2016-04-18 | C-ELV-MSPA-1995 SS+5d, SD-CS-L40-1252 | 37d | 0d | 2,769.38 |  |
| C-ELV-FA-1965 |  | Installation of second fix (Cabling & Wirring etc..) at level 40 | 20d | 2016-04-19 | 2016-05-11 | C-ELV-FA-1955, C-ELV-FA-1995 | 38d | 0d | 22,768.2 | GEN |
| C-ELV-FA-1975 |  | Installation & Connection of heat detector, smoke detector, flame detector etc.. at level 40 | 25d | 2016-05-12 | 2016-06-09 | C-ELV-FA-1965 | 38d | 1d | 27,321.84 | GEN |
| C-ELV-FA-1985 |  | Installtion & Connection of Racks & Panels at level 40 | 20d | 2016-06-14 | 2016-07-10 | C-ELV-FA-1975, C-ELV-FA-1785 SS | 156d | 1d | 27,321.84 |  |
|  | 2 | **Music System & Public Address System** |  | 2016-02-27 | 2016-07-03 |  |  |  |  |  |
| C-ELV-MSPA-1955 |  | Installation of MS/PA first fix (Conduits, Boxes within block work, Gypsum Boards & Raised FLooring at level 40 | 20d | 2016-02-27 | 2016-03-20 | C-F-P-1183, C-F-P-1173, SD-CS-L40-1232, C-ELV-MSPA-1755 SS | 58d | 0d | 6,994.34 | GEN |
| C-ELV-MSPA-1995 |  | Installation of Cable Trays & Truncking at level 40 | 25d | 2016-03-15 | 2016-04-12 | C-ELV-RMS-1995 SS+5d | 37d | 0d | 2,769.38 |  |
| C-ELV-MSPA-1965 |  | Installation of second fix (Cabling & Wirring etc..) at level 40 | 25d | 2016-04-13 | 2016-05-11 | C-ELV-MSPA-1955, C-ELV-MSPA-1995 | 38d | 0d | 6,994.34 | GEN |
| C-ELV-MSPA-1975 |  | Installation & Connection of speakers, Amplifier & Controller at level 40 | 25d | 2016-05-12 | 2016-06-09 | C-ELV-MSPA-1965 | 38d | 0d | 16,320.12 | GEN |
| C-ELV-MSPA-1985 |  | Installtion & Connection of Media hub, panels and processor at level 40 | 20d | 2016-06-11 | 2016-07-03 | C-ELV-MSPA-1975, C-ELV-MSPA-1785 SS | 159d | 4d | 16,320.12 |  |
|  | 3 | **IP CCTV & Access Control System** |  | 2016-02-27 | 2016-08-06 |  |  |  |  |  |
| C-ELV-CCTV-1955 |  | Installation of CCTV first Fix Conduits, Boxes within block work, Gypsum Boards & Raised FLooring at level 40 | 20d | 2016-02-27 | 2016-03-20 | C-F-P-1183, C-F-P-1173, SD-CS-L40-1272, C-ELV-CCTV-1755 SS | 69d | 0d | 8,161.35 | GEN |
| C-ELV-CCTV-1995 |  | Installation of Cable Trays & Truncking at level 40 | 25d | 2016-03-27 | 2016-04-24 | C-ELV-FA-1995 SS+5d | 37d | 0d | 2,769.38 |  |
| C-ELV-CCTV-1965 |  | Installation of second fix (Cabling & Wirring etc..) at level 40 | 20d | 2016-04-25 | 2016-05-17 | C-ELV-CCTV-1955, C-ELV-CCTV-1995 | 40d | 0d | 19,043.14 | GEN |
| C-ELV-CCTV-1975 |  | Installation & Connection of Camera's & Alarms at level 40 | 18d | 2016-05-18 | 2016-06-07 | C-ELV-CCTV-1965 | 40d | 3d | 183,698.91 | GEN |
| C-ELV-CCTV-1985 |  | Installtion & Connection of Racks, Panels etc... at level 40 | 25d | 2016-07-09 | 2016-08-06 | C-ELV-CCTV-1975 FF, C-ELV-CCTV-1785 SS | 123d | 0d | 7,322.52 |  |

Notes:
- C-ELV-RMS-1955: Expenses: 1 11902.8
- C-ELV-RMS-1995: Expenses: 1 2769.38
- C-ELV-RMS-1965: Expenses: 1 11902.8
- C-ELV-RMS-1975: Expenses: 1 27773.2
- C-ELV-RMS-1985: Expenses: 1 27773.2
- C-ELV-FA-1955: Expenses: 1 13660.9
- C-ELV-FA-1995: Expenses: 1 2769.38
- C-ELV-FA-1965: Expenses: 1 22768.2
- C-ELV-FA-1975: Expenses: 1 27321.8
- C-ELV-FA-1985: Expenses: 1 27321.8
- C-ELV-MSPA-1955: Expenses: 1 6994.34
- C-ELV-MSPA-1995: Expenses: 1 2769.38
- C-ELV-MSPA-1965: Expenses: 1 6994.34
- C-ELV-MSPA-1975: Expenses: 1 16320.1
- C-ELV-MSPA-1985: Expenses: 1 16320.1
- C-ELV-CCTV-1955: Expenses: 1 8161.35
- C-ELV-CCTV-1995: Expenses: 1 2769.38
- C-ELV-CCTV-1965: Expenses: 1 19043.1
- C-ELV-CCTV-1975: Expenses: 1 183699
- C-ELV-CCTV-1985: Expenses: 1 7322.52

| ID | WBS | Activity | Duration | Start | Finish | Predecessors | Total float | Free float | Cost | AREA |
| --- | --- | --- | --- | --- | --- | --- | --- | --- | --- | --- |
|  | 7 | **Communication System** |  | 2016-02-27 | 2016-08-06 |  |  |  |  |  |
| C-ELV-CS-1955 |  | Installation of CS first fix (Conduits, Boxes within block work, Gypsum Boards & Raised FLooring at level 40 | 20d | 2016-02-27 | 2016-03-20 | C-F-P-1183, C-F-P-1173, SD-CS-L40-1192, C-ELV-CS-1755 SS | 58d | 0d | 27,356.12 | GEN |
| C-ELV-CS-1995 |  | Installation of Cable Trays & Truncking at level 40 | 18d | 2016-03-03 | 2016-03-23 | C-MEP-E-2396 SS | 37d | 0d | 2,769.38 |  |
| C-ELV-CS-1965 |  | Installation of second fix (Cabling & Wirring etc..) at level 40 | 25d | 2016-03-24 | 2016-04-21 | C-ELV-CS-1955, C-ELV-CS-1995 | 55d | 0d | 82,068.35 | GEN |
| C-ELV-CS-1975 |  | Installation & Connection of Wireless Access points & IP dect phone & RJ 45 at level 40 | 25d | 2016-04-23 | 2016-05-21 | C-ELV-CS-1965 | 55d | 18d | 93,342.54 | GEN |
| C-ELV-CS-1985 |  | Installtion & Connection of Controller & Instrumentation at level 40 | 20d | 2016-07-14 | 2016-08-06 | C-ELV-CS-1975, C-ELV-CS-1785 SS | 137d | 0d | 223,314.69 |  |
|  | 4 | **IP, SMATV & QAM Television System** |  | 2016-02-27 | 2016-07-12 |  |  |  |  |  |
| C-ELV-SMATV-1955 |  | Installation of SMATV first Fix Conduits, Boxes within block work , Gypsum Boards & Raised FLooring at level 40 | 20d | 2016-02-27 | 2016-03-20 | C-F-P-1183, C-F-P-1173, SD-CS-L40-1292, C-ELV-SMATV-1755 SS | 54d | 0d | 4,452.18 | GEN |
| C-ELV-SMATV-1995 |  | Installation of Cable Trays & Truncking at level 40 | 25d | 2016-04-02 | 2016-04-30 | C-ELV-CCTV-1995 SS+5d | 37d | 0d | 2,769.38 |  |
| C-ELV-SMATV-1965 |  | Installation of second fix (Cabling & Wirring etc..) at level 40 | 16d | 2016-05-01 | 2016-05-18 | C-ELV-SMATV-1955, C-ELV-SMATV-1995 | 39d | 0d | 10,388.41 | GEN |
| C-ELV-SMATV-1975 |  | Installation & Connection of Outlets, switches and splitter at level 40 | 18d | 2016-05-19 | 2016-06-08 | C-ELV-SMATV-1965 | 39d | 2d | 6,537.45 | GEN |
| C-ELV-SMATV-1985 |  | Installtion & Connection of SMATV & QAM fiber & receiver at level 40 | 20d | 2016-06-16 | 2016-07-12 | C-ELV-SMATV-1975, C-ELV-SMATV-1785 SS | 154d | 0d | 2,419.21 |  |
|  | 5 | **BMS system** |  | 2016-02-27 | 2016-07-14 |  |  |  |  |  |
| C-MEP-BMS-1955 |  | Installation of BMS first Fix Conduits, Boxes within block work , Gypsum Boards & Raised FLooring at level 40 | 20d | 2016-02-27 | 2016-03-20 | C-F-P-1183, C-F-P-1173, SD-CS-L40-1172, C-MEP-BMS-1755 SS | 72d | 0d | 8,895.95 | GEN |
| C-MEP-BMS-1995 |  | Installation of Cable trays & Trunking at level 40 | 20d | 2016-04-07 | 2016-04-30 | C-ELV-SMATV-1995 SS+5d | 37d | 0d |  |  |
| C-MEP-BMS-1965 |  | Installation of BMS Cabling & Wirring at level 40 | 16d | 2016-05-01 | 2016-05-18 | C-MEP-BMS-1955, C-MEP-BMS-1995 | 37d | 0d | 11,861.27 | GEN |
| C-MEP-BMS-1975 |  | Installation & Connection of BMS Sensors, Relays, & Valves at level 40 | 20d | 2016-05-19 | 2016-06-11 | C-MEP-BMS-1965, C-MEP-PD-1985, C-MEP-PD-1975, C-MEP-FF-1574, C-MEP-AC-3188, C-MEP-AC-3168, C-MEP-AC-3178 | 37d | 0d | 14,826.58 | GEN |
| C-MEP-BMS-1985 |  | Installtion & Connection of BMS Racks, Panels etc... at level 40 | 20d | 2016-06-19 | 2016-07-14 | C-MEP-BMS-1975, C-MEP-BMS-1785 SS | 162d | 0d | 14,826.58 |  |
|  | 38 | **MEP - Level 41** |  | 2016-02-01 | 2017-01-01 |  |  |  |  |  |
|  | 1 | **Electrical** |  | 2016-02-18 | 2017-01-01 |  |  |  |  |  |
| C-MEP-E-2466 |  | Installation of first Electrical Fix Conduits, Boxes within block work & Gypsum Boards at level 41 | 20d | 2016-02-18 | 2016-03-12 | C-F-P-1233, C-MEP-E-2046 | 32d | 11d | 55,235.7 | GEN |
| C-MEP-E-2516 |  | Installation of Cable Trays & Truncking at level 41 | 18d | 2016-03-08 | 2016-03-28 | C-MEP-FF-1644 SS+10d, C-MEP-PD-2055 SS+5d, C-MEP-E-2096 | 18d | 0d | 21,017.55 |  |
| C-MEP-E-2476 |  | Installation of Electrical Second Fix (Cabling & Wirring etc..). at level 41 | 18d | 2016-03-29 | 2016-04-18 | C-MEP-E-2466, C-MEP-E-2516, C-MEP-E-2056 | 18d | 0d | 190,528.33 | GEN |
| C-MEP-E-2486 |  | Installation & Connection of Electrical DB's, SMDB's at level 41 | 16d | 2016-04-19 | 2016-05-07 | C-MEP-E-2476, C-MEP-E-2306 | 18d | 0d | 78,921.15 | GEN |
| C-MEP-E-2506 |  | Installation & Connection of Lighting Fixtures & Sockets at level 41 | 14d | 2016-12-15 | 2017-01-01 | C-MEP-E-2476, C-F-CF-2907, C-F-CF-2897, C-F-WF-1654, C-F-WF-1664, C-MEP-E-2566, C-F-P-LSF-712 FF | 86d | 0d | 71,857.69 | GEN |

Notes:
- C-ELV-CS-1955: Expenses: 1 27356.1
- C-ELV-CS-1995: Expenses: 1 2769.38
- C-ELV-CS-1965: Expenses: 1 82068.4
- C-ELV-CS-1975: Expenses: 1 93342.5
- C-ELV-CS-1985: Expenses: 1 223315
- C-ELV-SMATV-1955: Expenses: 1 4452.18
- C-ELV-SMATV-1995: Expenses: 1 2769.38
- C-ELV-SMATV-1965: Expenses: 1 10388.4
- C-ELV-SMATV-1975: Expenses: 1 6537.45
- C-ELV-SMATV-1985: Expenses: 1 2419.21
- C-MEP-BMS-1955: Expenses: 1 8895.95
- C-MEP-BMS-1965: Expenses: 1 11861.3
- C-MEP-BMS-1975: Expenses: 1 14826.6
- C-MEP-BMS-1985: Expenses: 1 14826.6
- C-MEP-E-2466: Expenses: 1 55235.7
- C-MEP-E-2516: Expenses: 1 21017.5
- C-MEP-E-2476: Expenses: 1 57962.7; 2 132566
- C-MEP-E-2486: Expenses: 1 78921.1
- C-MEP-E-2506: Expenses: 1 71857.7

| ID | WBS | Activity | Duration | Start | Finish | Predecessors | Total float | Free float | Cost | AREA |
| --- | --- | --- | --- | --- | --- | --- | --- | --- | --- | --- |
|  | 2 | **HVAC** |  | 2016-02-01 | 2016-11-24 |  |  |  |  |  |
| C-MEP-AC-3288 |  | Installation of Ductwork, Insulation & Dampers at level 41 | 23d | 2016-02-01 | 2016-02-28 | C-F-P-1233 SS, C-MEP-AC-3368, SD-CS-L41-992 | 28d | 0d | 140,612.08 | GEN |
| C-MEP-AC-3308 |  | Installation of Chilled Water Pipes & Valves at level 41 | 25d | 2016-02-14 | 2016-03-13 | C-MEP-AC-3288 SS+10d, C-MEP-AC-2588 | 87d | 0d | 30,741.92 | GEN |
| C-MEP-AC-3348 |  | Installation of HVAC equipments AHU's, FCU's, ERU's, VAV's, CAV's & Fans at level 41 | 25d | 2016-02-28 | 2016-03-27 | C-MEP-AC-3338 FF, C-MEP-AC-3328 FF, C-MEP-AC-3288 SS | 87d | 49d | 43,326.8 | GEN |
| C-MEP-AC-3338 |  | Pressure testing of Ductwork at level 41 | 8d | 2016-03-05 | 2016-03-13 | C-MEP-AC-3288, C-MEP-AC-3178 | 64d | 0d |  | GEN |
| C-MEP-AC-3298 |  | Installation of Silencers, Attenuators, Isolators & Detectors at level 41 | 12d | 2016-03-14 | 2016-03-27 | C-MEP-AC-3338 | 107d | 69d | 28,274.51 | GEN |
| C-MEP-AC-3328 |  | Pressure testing & Insulation of Chilled Water Pipes at level 41 | 12d | 2016-03-14 | 2016-03-27 | C-MEP-AC-3308 | 87d | 0d | 8,821.1 | GEN |
| C-MEP-AC-3318 |  | Installation of Chilled Water Pipes Control Devices & Isolator at level 41 | 8d | 2016-03-28 | 2016-04-05 | C-MEP-AC-3328 | 99d | 61d | 2,889.38 | GEN |
| C-MEP-AC-3358 |  | Installation of Grilles, Diffusers & Controller at level 41 | 12d | 2016-11-12 | 2016-11-24 | C-MEP-AC-3348, C-F-CF-2907, C-F-CF-2897, C-F-WF-1664 FF, C-F-CF-2897 FF, C-F-WF-1654 FF, C-MEP-AC-3438 | 81d | 15d | 55,880.87 | GEN |
|  | 3 | **Fire Fighting** |  | 2016-02-14 | 2016-08-03 |  |  |  |  |  |
| C-MEP-FF-1644 |  | Installation of FIre fighting Pipes at level 41 | 25d | 2016-02-14 | 2016-03-13 | C-MEP-AC-3288 SS+10d, SD-CS-L41-1012 | 28d | 0d | 45,406.88 | GEN |
| C-MEP-FF-1664 |  | Pressure testing of fire fighting pipes at level 41 | 8d | 2016-03-14 | 2016-03-22 | C-MEP-FF-1644 | 71d | 0d | 5,280.67 | GEN |
| C-MEP-FF-1654 |  | Installation of fire Fighting Valves at level 41 | 20d | 2016-03-23 | 2016-04-14 | C-MEP-FF-1664 | 71d | 33d | 18,427.34 | GEN |
| C-MEP-FF-1674 |  | Installation of Fire Fighting Sprinklers & Fire hose Cabinets & Extinguishers at level 41 | 14d | 2016-07-19 | 2016-08-03 | C-MEP-FF-1654, C-F-CF-2897, C-F-CF-2887, C-MEP-FF-1664 | 102d | 0d | 64,097.37 | GEN |
|  | 4 | **Plumbing & Drainage** |  | 2016-03-02 | 2016-11-12 |  |  |  |  |  |
| C-MEP-PD-2055 |  | Installation of Water Pipes & Valves (Hot & Cold atc..) at level 41 | 20d | 2016-03-02 | 2016-03-24 | C-MEP-FF-1644 SS, C-F-P-1243, SD-CS-L41-1052 | 18d | 0d | 83,874.06 | GEN |
| C-MEP-PD-2065 |  | Installation drainage Pipes at level 41 | 25d | 2016-03-02 | 2016-03-30 | C-MEP-PD-2055 SS | 76d | 0d | 30,204.4 | GEN |
| C-MEP-PD-2075 |  | Pressure testing & Insullation of water pipes at level 41 | 8d | 2016-03-26 | 2016-04-03 | C-MEP-PD-2055 | 81d | 43d | 9,573.63 | GEN |
| C-MEP-PD-2085 |  | Pressure testing of drainage pipes at level 41 | 8d | 2016-03-31 | 2016-04-09 | C-MEP-PD-2065 | 76d | 38d | 1,651.42 | GEN |
| C-MEP-PD-2095 |  | Installation of Outlets, Drains, Gullies, Cowls, & Clean out at level 41 | 20d | 2016-10-20 | 2016-11-12 | C-MEP-PD-2075, C-MEP-PD-2075 FF, C-F-FF-1654, C-F-WF-1654, C-F-FF-1654 FF, C-F-WF-1674, C-F-WF-1654 FF, C-F-DW-1654, C-MEP-PD-1845, C-F-P-LSF-712 FF | 124d | 4d | 13,120.28 | GEN |
|  | 7 | **ELV systems** |  | 2016-03-02 | 2016-08-06 |  |  |  |  |  |
|  | 1 | **Room Management System** |  | 2016-03-02 | 2016-07-24 |  |  |  |  |  |
| C-ELV-RMS-2055 |  | Installation of RMS first fix (Conduits, Boxes within block work , Gypsum Boards & Raised FLooring at level 41 | 20d | 2016-03-02 | 2016-03-24 | C-F-P-1243, C-F-P-1233, SD-CS-L41-1232, C-ELV-RMS-1955 SS | 54d | 0d | 11,902.78 | GEN |
| C-ELV-RMS-2095 |  | Installation of Cable Trays & Truncking at level 41 | 25d | 2016-03-14 | 2016-04-11 | C-ELV-CS-2095 SS+5d | 38d | 0d | 2,769.38 |  |
| C-ELV-RMS-2065 |  | Installation of second fix (Cabling & Wirring etc..) at level 41 | 25d | 2016-04-12 | 2016-05-10 | C-ELV-RMS-2055, C-ELV-RMS-2095 | 44d | 0d | 11,902.78 | GEN |
| C-ELV-RMS-2075 |  | Installation & Connection of ethernets & HVAC thermostates etc.. at level 41 | 25d | 2016-05-11 | 2016-06-08 | C-ELV-RMS-2065 | 44d | 6d | 27,773.16 | GEN |
| C-ELV-RMS-2085 |  | Installtion & Connection of Panels, Controller, switches, server etc..) at level 41 | 20d | 2016-06-28 | 2016-07-24 | C-ELV-RMS-2075, C-ELV-RMS-1985 SS | 144d | 0d | 27,773.16 |  |

Notes:
- C-MEP-AC-3288: Expenses: 1 140612
- C-MEP-AC-3308: Expenses: 1 30741.9
- C-MEP-AC-3348: Expenses: 1 43326.8
- C-MEP-AC-3298: Expenses: 1 28274.5
- C-MEP-AC-3328: Expenses: 1 8821.1
- C-MEP-AC-3318: Expenses: 1 2889.38
- C-MEP-AC-3358: Expenses: 1 55880.9
- C-MEP-FF-1644: Expenses: 1 45406.9
- C-MEP-FF-1664: Expenses: 1 5280.67
- C-MEP-FF-1654: Expenses: 1 18427.3
- C-MEP-FF-1674: Expenses: 1 64097.4
- C-MEP-PD-2055: Expenses: 1 83874.1
- C-MEP-PD-2065: Expenses: 1 30204.4
- C-MEP-PD-2075: Expenses: 1 9573.63
- C-MEP-PD-2085: Expenses: 1 1651.42
- C-MEP-PD-2095: Expenses: 1 13120.3
- C-ELV-RMS-2055: Expenses: 1 11902.8
- C-ELV-RMS-2095: Expenses: 1 2769.38
- C-ELV-RMS-2065: Expenses: 1 11902.8
- C-ELV-RMS-2075: Expenses: 1 27773.2
- C-ELV-RMS-2085: Expenses: 1 27773.2

| ID | WBS | Activity | Duration | Start | Finish | Predecessors | Total float | Free float | Cost | AREA |
| --- | --- | --- | --- | --- | --- | --- | --- | --- | --- | --- |
|  | 12 | **Fire Alarm & Detection System** |  | 2016-03-02 | 2016-07-11 |  |  |  |  |  |
| C-ELV-FA-2055 |  | Installation of FA first Fix Conduits, Boxes within block work , Gypsum Boards & Raised FLooring at level 41 | 20d | 2016-03-02 | 2016-03-24 | C-F-P-1243, C-F-P-1233, C-ELV-FA-1955 SS | 58d | 0d | 13,660.92 | GEN |
| C-ELV-FA-2095 |  | Installation of Cable Trays & Truncking at level 41 | 25d | 2016-03-26 | 2016-04-23 | C-ELV-MSPA-2095 SS+5d, SD-CS-L41-1272 | 38d | 0d | 2,769.38 |  |
| C-ELV-FA-2065 |  | Installation of second fix (Cabling & Wirring etc..) at level 41 | 20d | 2016-04-24 | 2016-05-16 | C-ELV-FA-2055, C-ELV-FA-2095 | 39d | 0d | 22,768.2 | GEN |
| C-ELV-FA-2075 |  | Installation & Connection of heat detector, smoke detector, flame detector etc.. at level 41 | 25d | 2016-05-17 | 2016-06-14 | C-ELV-FA-2065 | 39d | 0d | 27,321.84 | GEN |
| C-ELV-FA-2085 |  | Installtion & Connection of Racks & Panels at level 41 | 20d | 2016-06-15 | 2016-07-11 | C-ELV-FA-2075, C-ELV-FA-1985 SS | 155d | 14d | 27,321.84 |  |
|  | 2 | **Music System & Public Address System** |  | 2016-03-02 | 2016-07-11 |  |  |  |  |  |
| C-ELV-MSPA-2055 |  | Installation of MS/PA first fix (Conduits, Boxes within block work, Gypsum Boards & Raised FLooring at level 41 | 20d | 2016-03-02 | 2016-03-24 | C-F-P-1243, C-F-P-1233, SD-CS-L41-1252, C-ELV-MSPA-1955 SS | 54d | 0d | 6,994.34 | GEN |
| C-ELV-MSPA-2095 |  | Installation of Cable Trays & Truncking at level 41 | 25d | 2016-03-20 | 2016-04-17 | C-ELV-RMS-2095 SS+5d | 38d | 0d | 2,769.38 |  |
| C-ELV-MSPA-2065 |  | Installation of second fix (Cabling & Wirring etc..) at level 41 | 25d | 2016-04-18 | 2016-05-16 | C-ELV-MSPA-2055, C-ELV-MSPA-2095 | 39d | 0d | 6,994.34 | GEN |
| C-ELV-MSPA-2075 |  | Installation & Connection of speakers, Amplifier & Controller at level 41 | 25d | 2016-05-17 | 2016-06-14 | C-ELV-MSPA-2065 | 39d | 0d | 16,320.12 | GEN |
| C-ELV-MSPA-2085 |  | Installtion & Connection of Media hub, panels and processor at level 41 | 20d | 2016-06-15 | 2016-07-11 | C-ELV-MSPA-2075, C-ELV-MSPA-1985 SS | 155d | 14d | 16,320.12 |  |
|  | 3 | **IP CCTV & Access Control System** |  | 2016-03-02 | 2016-08-06 |  |  |  |  |  |
| C-ELV-CCTV-2055 |  | Installation of CCTV first Fix Conduits, Boxes within block work, Gypsum Boards & Raised FLooring at level 41 | 20d | 2016-03-02 | 2016-03-24 | C-F-P-1243, C-F-P-1233, SD-CS-L41-1292, C-ELV-CCTV-1955 SS | 65d | 0d | 8,161.35 | GEN |
| C-ELV-CCTV-2095 |  | Installation of Cable Trays & Truncking at level 41 | 25d | 2016-03-31 | 2016-04-28 | C-ELV-FA-2095 SS+5d | 38d | 0d | 2,769.38 |  |
| C-ELV-CCTV-2065 |  | Installation of second fix (Cabling & Wirring etc..) at level 41 | 20d | 2016-04-30 | 2016-05-22 | C-ELV-CCTV-2055, C-ELV-CCTV-2095 | 41d | 0d | 19,043.14 | GEN |
| C-ELV-CCTV-2075 |  | Installation & Connection of Camera's & Alarms at level 41 | 18d | 2016-05-23 | 2016-06-12 | C-ELV-CCTV-2065 | 41d | 3d | 183,698.91 | GEN |
| C-ELV-CCTV-2085 |  | Installtion & Connection of Racks, Panels etc... at level 41 | 25d | 2016-07-09 | 2016-08-06 | C-ELV-CCTV-2075 FF, C-ELV-CCTV-1985 SS | 123d | 0d | 7,322.52 |  |
|  | 7 | **Communication System** |  | 2016-03-02 | 2016-08-06 |  |  |  |  |  |
| C-ELV-CS-2055 |  | Installation of CS first fix (Conduits, Boxes within block work, Gypsum Boards & Raised FLooring at level 41 | 20d | 2016-03-02 | 2016-03-24 | C-F-P-1243, C-F-P-1233, SD-CS-L41-1212, C-ELV-CS-1955 SS | 59d | 0d | 27,356.12 | GEN |
| C-ELV-CS-2095 |  | Installation of Cable Trays & Truncking at level 41 | 18d | 2016-03-08 | 2016-03-28 | C-MEP-E-2516 SS | 38d | 0d | 2,769.38 |  |
| C-ELV-CS-2065 |  | Installation of second fix (Cabling & Wirring etc..) at level 41 | 25d | 2016-03-29 | 2016-04-26 | C-ELV-CS-2055, C-ELV-CS-2095 | 56d | 0d | 82,068.35 | GEN |
| C-ELV-CS-2075 |  | Installation & Connection of Wireless Access points & IP dect phone & RJ 45 at level 41 | 25d | 2016-04-27 | 2016-05-25 | C-ELV-CS-2065 | 56d | 18d | 93,342.54 | GEN |
| C-ELV-CS-2085 |  | Installtion & Connection of Controller & Instrumentation at level 41 | 20d | 2016-07-14 | 2016-08-06 | C-ELV-CS-2075, C-ELV-CS-1985 SS | 137d | 0d | 223,314.69 |  |

Notes:
- C-ELV-FA-2055: Expenses: 1 13660.9
- C-ELV-FA-2095: Expenses: 1 2769.38
- C-ELV-FA-2065: Expenses: 1 22768.2
- C-ELV-FA-2075: Expenses: 1 27321.8
- C-ELV-FA-2085: Expenses: 1 27321.8
- C-ELV-MSPA-2055: Expenses: 1 6994.34
- C-ELV-MSPA-2095: Expenses: 1 2769.38
- C-ELV-MSPA-2065: Expenses: 1 6994.34
- C-ELV-MSPA-2075: Expenses: 1 16320.1
- C-ELV-MSPA-2085: Expenses: 1 16320.1
- C-ELV-CCTV-2055: Expenses: 1 8161.35
- C-ELV-CCTV-2095: Expenses: 1 2769.38
- C-ELV-CCTV-2065: Expenses: 1 19043.1
- C-ELV-CCTV-2075: Expenses: 1 183699
- C-ELV-CCTV-2085: Expenses: 1 7322.52
- C-ELV-CS-2055: Expenses: 1 27356.1
- C-ELV-CS-2095: Expenses: 1 2769.38
- C-ELV-CS-2065: Expenses: 1 82068.4
- C-ELV-CS-2075: Expenses: 1 93342.5
- C-ELV-CS-2085: Expenses: 1 223315

| ID | WBS | Activity | Duration | Start | Finish | Predecessors | Total float | Free float | Cost | AREA |
| --- | --- | --- | --- | --- | --- | --- | --- | --- | --- | --- |
|  | 4 | **IP, SMATV & QAM Television System** |  | 2016-03-02 | 2016-07-12 |  |  |  |  |  |
| C-ELV-SMATV-2055 |  | Installation of SMATV first Fix Conduits, Boxes within block work , Gypsum Boards & Raised FLooring at level 41 | 20d | 2016-03-02 | 2016-03-24 | C-F-P-1243, C-F-P-1233, SD-CS-L41-1312, C-ELV-SMATV-1955 SS | 50d | 0d | 4,452.18 | GEN |
| C-ELV-SMATV-2095 |  | Installation of Cable Trays & Truncking at level 41 | 25d | 2016-04-06 | 2016-05-04 | C-ELV-CCTV-2095 SS+5d | 38d | 0d | 2,769.38 |  |
| C-ELV-SMATV-2065 |  | Installation of second fix (Cabling & Wirring etc..) at level 41 | 16d | 2016-05-05 | 2016-05-23 | C-ELV-SMATV-2055, C-ELV-SMATV-2095 | 40d | 0d | 10,388.41 | GEN |
| C-ELV-SMATV-2075 |  | Installation & Connection of Outlets, switches and splitter at level 41 | 18d | 2016-05-24 | 2016-06-13 | C-ELV-SMATV-2065 | 40d | 2d | 6,537.45 | GEN |
| C-ELV-SMATV-2085 |  | Installtion & Connection of SMATV & QAM fiber & receiver at level 41 | 20d | 2016-06-16 | 2016-07-12 | C-ELV-SMATV-2075, C-ELV-SMATV-1985 SS | 154d | 12d | 2,419.21 |  |
|  | 5 | **BMS system** |  | 2016-03-02 | 2016-07-14 |  |  |  |  |  |
| C-MEP-BMS-2055 |  | Installation of BMS first Fix Conduits, Boxes within block work , Gypsum Boards & Raised FLooring at level 41 | 20d | 2016-03-02 | 2016-03-24 | C-F-P-1243, C-F-P-1233, SD-CS-L41-1192, C-MEP-BMS-1955 SS | 68d | 0d | 8,895.95 | GEN |
| C-MEP-BMS-2095 |  | Installation of Cable trays & Trunking at level 41 | 20d | 2016-04-12 | 2016-05-04 | C-ELV-SMATV-2095 SS+5d | 38d | 0d |  |  |
| C-MEP-BMS-2065 |  | Installation of BMS Cabling & Wirring at level 41 | 16d | 2016-05-05 | 2016-05-23 | C-MEP-BMS-2055, C-MEP-BMS-2095 | 38d | 0d | 11,861.27 | GEN |
| C-MEP-BMS-2075 |  | Installation & Connection of BMS Sensors, Relays, & Valves at level 41 | 20d | 2016-05-24 | 2016-06-15 | C-MEP-BMS-2065, C-MEP-PD-2085, C-MEP-PD-2075, C-MEP-FF-1654, C-MEP-AC-3348, C-MEP-AC-3328, C-MEP-AC-3338 | 38d | 0d | 14,826.58 | GEN |
| C-MEP-BMS-2085 |  | Installtion & Connection of BMS Racks, Panels etc... at level 41 | 20d | 2016-06-19 | 2016-07-14 | C-MEP-BMS-2075, C-MEP-BMS-1985 SS | 162d | 12d | 14,826.58 |  |
|  | 37 | **MEP - Level 42** |  | 2016-02-18 | 2016-12-17 |  |  |  |  |  |
|  | 1 | **Electrical** |  | 2016-03-06 | 2016-12-17 |  |  |  |  |  |
| C-MEP-E-2646 |  | Installation of first Electrical Fix Conduits, Boxes within block work & Gypsum Boards at level 42 | 20d | 2016-03-06 | 2016-03-28 | C-F-P-1323, C-MEP-E-2166 | 48d | 11d | 55,235.7 | GEN |
| C-MEP-E-2696 |  | Installation of Cable Trays & Truncking at level 42 | 18d | 2016-03-24 | 2016-04-13 | C-MEP-FF-1764 SS+10d, C-MEP-PD-2205 SS+5d, C-MEP-E-2216 | 19d | 0d | 21,017.55 |  |
| C-MEP-E-2656 |  | Installation of Electrical Second Fix (Cabling & Wirring etc..). at level 42 | 18d | 2016-04-14 | 2016-05-04 | C-MEP-E-2646, C-MEP-E-2696, C-MEP-E-2176 | 34d | 0d | 190,528.33 | GEN |
| C-MEP-E-2666 |  | Installation & Connection of Electrical DB's, SMDB's at level 42 | 16d | 2016-05-05 | 2016-05-23 | C-MEP-E-2656, C-MEP-E-2426 | 34d | 0d | 78,921.15 | GEN |
| C-MEP-E-2686 |  | Installation & Connection of Lighting Fixtures & Sockets at level 42 | 14d | 2016-12-01 | 2016-12-17 | C-MEP-E-2656, C-F-CF-3117, C-F-CF-3107, C-F-WF-1774, C-F-WF-1784, C-MEP-E-2266, C-F-P-LSF-722 FF | 98d | 0d | 71,857.69 | GEN |
|  | 2 | **HVAC** |  | 2016-02-18 | 2016-11-30 |  |  |  |  |  |
| C-MEP-AC-3528 |  | Installation of Ductwork, Insulation & Dampers at level 42 | 23d | 2016-02-18 | 2016-03-15 | C-F-P-1323 SS, C-MEP-AC-2968, SD-CS-L42-1012 | 21d | 0d | 140,612.08 | GEN |
| C-MEP-AC-3548 |  | Installation of Chilled Water Pipes & Valves at level 42 | 25d | 2016-03-01 | 2016-03-29 | C-MEP-AC-3528 SS+10d, C-MEP-AC-2748 | 68d | 0d | 30,741.92 | GEN |
| C-MEP-AC-3588 |  | Installation of HVAC equipments AHU's, FCU's, ERU's, VAV's, CAV's & Fans at level 42 | 25d | 2016-03-15 | 2016-04-12 | C-MEP-AC-3578 FF, C-MEP-AC-3568 FF, C-MEP-AC-3528 SS | 68d | 49d | 42,889.41 | GEN |
| C-MEP-AC-3578 |  | Pressure testing of Ductwork at level 42 | 8d | 2016-03-16 | 2016-03-24 | C-MEP-AC-3528, C-MEP-AC-3338 | 62d | 0d |  | GEN |
| C-MEP-AC-3538 |  | Installation of Silencers, Attenuators, Isolators & Detectors at level 42 | 12d | 2016-03-26 | 2016-04-07 | C-MEP-AC-3578 | 92d | 73d | 28,274.51 | GEN |
| C-MEP-AC-3568 |  | Pressure testing & Insulation of Chilled Water Pipes at level 42 | 12d | 2016-03-30 | 2016-04-12 | C-MEP-AC-3548 | 68d | 0d | 8,821.1 | GEN |
| C-MEP-AC-3558 |  | Installation of Chilled Water Pipes Control Devices & Isolator at level 42 | 8d | 2016-04-13 | 2016-04-21 | C-MEP-AC-3568 | 80d | 61d | 2,889.38 | GEN |
| C-MEP-AC-3598 |  | Installation of Grilles, Diffusers & Controller at level 42 | 12d | 2016-11-17 | 2016-11-30 | C-MEP-AC-3588, C-F-CF-3117, C-F-CF-3107, C-F-WF-1784 FF, C-F-CF-3107 FF, C-F-WF-1774 FF, C-MEP-AC-3038 SS | 34d | 12d | 55,880.87 | GEN |

Notes:
- C-ELV-SMATV-2055: Expenses: 1 4452.18
- C-ELV-SMATV-2095: Expenses: 1 2769.38
- C-ELV-SMATV-2065: Expenses: 1 10388.4
- C-ELV-SMATV-2075: Expenses: 1 6537.45
- C-ELV-SMATV-2085: Expenses: 1 2419.21
- C-MEP-BMS-2055: Expenses: 1 8895.95
- C-MEP-BMS-2065: Expenses: 1 11861.3
- C-MEP-BMS-2075: Expenses: 1 14826.6
- C-MEP-BMS-2085: Expenses: 1 14826.6
- C-MEP-E-2646: Expenses: 1 55235.7
- C-MEP-E-2696: Expenses: 1 21017.5
- C-MEP-E-2656: Expenses: 1 57962.7; 2 132566
- C-MEP-E-2666: Expenses: 1 78921.1
- C-MEP-E-2686: Expenses: 1 71857.7
- C-MEP-AC-3528: Expenses: 1 140612
- C-MEP-AC-3548: Expenses: 1 30741.9
- C-MEP-AC-3588: Expenses: 1 42889.4
- C-MEP-AC-3538: Expenses: 1 28274.5
- C-MEP-AC-3568: Expenses: 1 8821.1
- C-MEP-AC-3558: Expenses: 1 2889.38
- C-MEP-AC-3598: Expenses: 1 55880.9

| ID | WBS | Activity | Duration | Start | Finish | Predecessors | Total float | Free float | Cost | AREA |
| --- | --- | --- | --- | --- | --- | --- | --- | --- | --- | --- |
|  | 3 | **Fire Fighting** |  | 2016-03-01 | 2016-08-20 |  |  |  |  |  |
| C-MEP-FF-1764 |  | Installation of FIre fighting Pipes at level 42 | 25d | 2016-03-01 | 2016-03-29 | C-MEP-AC-3528 SS+10d, SD-CS-L42-1032 | 29d | 0d | 45,406.88 | GEN |
| C-MEP-FF-1784 |  | Pressure testing of fire fighting pipes at level 42 | 8d | 2016-03-30 | 2016-04-07 | C-MEP-FF-1764 | 52d | 0d | 5,280.67 | GEN |
| C-MEP-FF-1774 |  | Installation of fire Fighting Valves at level 42 | 20d | 2016-04-09 | 2016-05-01 | C-MEP-FF-1784 | 52d | 33d | 18,427.34 | GEN |
| C-MEP-FF-1794 |  | Installation of Fire Fighting Sprinklers & Fire hose Cabinets & Extinguishers at level 42 | 14d | 2016-08-04 | 2016-08-20 | C-MEP-FF-1774, C-F-CF-3107, C-F-CF-3097, C-MEP-FF-1784 | 83d | 0d | 64,097.37 | GEN |
|  | 4 | **Plumbing & Drainage** |  | 2016-03-19 | 2016-11-28 |  |  |  |  |  |
| C-MEP-PD-2205 |  | Installation of Water Pipes & Valves (Hot & Cold atc..) at level 42 | 20d | 2016-03-19 | 2016-04-10 | C-MEP-FF-1764 SS, C-F-P-1333, SD-CS-L42-1072 | 19d | 0d | 83,874.06 | GEN |
| C-MEP-PD-2215 |  | Installation drainage Pipes at level 42 | 25d | 2016-03-19 | 2016-04-16 | C-MEP-PD-2205 SS | 57d | 0d | 30,204.4 | GEN |
| C-MEP-PD-2225 |  | Pressure testing & Insullation of water pipes at level 42 | 8d | 2016-04-11 | 2016-04-19 | C-MEP-PD-2205 | 62d | 43d | 9,573.63 | GEN |
| C-MEP-PD-2235 |  | Pressure testing of drainage pipes at level 42 | 8d | 2016-04-17 | 2016-04-25 | C-MEP-PD-2215 | 57d | 38d | 1,651.42 | GEN |
| C-MEP-PD-2245 |  | Installation of Outlets, Drains, Gullies, Cowls, & Clean out at level 42 | 20d | 2016-11-06 | 2016-11-28 | C-MEP-PD-2225, C-MEP-PD-2225 FF, C-F-FF-1774, C-F-WF-1774, C-F-FF-1774 FF, C-F-WF-1794, C-F-WF-1774 FF, C-F-DW-1774, C-MEP-PD-2145, C-F-P-LSF-722 FF | 110d | 10d | 13,120.28 | GEN |
|  | 7 | **ELV systems** |  | 2016-03-19 | 2016-08-29 |  |  |  |  |  |
|  | 1 | **Room Management System** |  | 2016-03-19 | 2016-07-24 |  |  |  |  |  |
| C-ELV-RMS-2205 |  | Installation of RMS first fix (Conduits, Boxes within block work , Gypsum Boards & Raised FLooring at level 42 | 20d | 2016-03-19 | 2016-04-10 | C-F-P-1333, C-F-P-1323, SD-CS-L42-1252, C-ELV-RMS-2055 SS | 40d | 0d | 11,902.78 | GEN |
| C-ELV-RMS-2245 |  | Installation of Cable Trays & Truncking at level 42 | 25d | 2016-03-30 | 2016-04-27 | C-ELV-CS-2245 SS+5d | 19d | 0d | 2,769.38 |  |
| C-ELV-RMS-2215 |  | Installation of second fix (Cabling & Wirring etc..) at level 42 | 25d | 2016-04-28 | 2016-05-26 | C-ELV-RMS-2205, C-ELV-RMS-2245 | 25d | 0d | 11,902.78 | GEN |
| C-ELV-RMS-2225 |  | Installation & Connection of ethernets & HVAC thermostates etc.. at level 42 | 25d | 2016-05-28 | 2016-06-25 | C-ELV-RMS-2215 | 25d | 2d | 27,773.16 | GEN |
| C-ELV-RMS-2235 |  | Installtion & Connection of Panels, Controller, switches, server etc..) at level 42 | 20d | 2016-06-28 | 2016-07-24 | C-ELV-RMS-2225, C-ELV-RMS-2085 SS | 144d | 0d | 27,773.16 |  |
|  | 12 | **Fire Alarm & Detection System** |  | 2016-03-19 | 2016-07-27 |  |  |  |  |  |
| C-ELV-FA-2205 |  | Installation of FA first Fix Conduits, Boxes within block work , Gypsum Boards & Raised FLooring at level 42 | 20d | 2016-03-19 | 2016-04-10 | C-F-P-1333, C-F-P-1323, SD-CS-L42-1292, C-ELV-FA-2055 SS | 44d | 0d | 13,660.92 | GEN |
| C-ELV-FA-2245 |  | Installation of Cable Trays & Truncking at level 42 | 25d | 2016-04-11 | 2016-05-09 | C-ELV-MSPA-2245 SS+5d | 19d | 0d | 2,769.38 |  |
| C-ELV-FA-2215 |  | Installation of second fix (Cabling & Wirring etc..) at level 42 | 20d | 2016-05-10 | 2016-06-01 | C-ELV-FA-2205, C-ELV-FA-2245 | 20d | 0d | 22,768.2 | GEN |
| C-ELV-FA-2225 |  | Installation & Connection of heat detector, smoke detector, flame detector etc.. at level 42 | 25d | 2016-06-02 | 2016-06-30 | C-ELV-FA-2215 | 20d | 0d | 27,321.84 | GEN |
| C-ELV-FA-2235 |  | Installtion & Connection of Racks & Panels at level 42 | 20d | 2016-07-02 | 2016-07-27 | C-ELV-FA-2225, C-ELV-FA-2085 SS | 141d | 0d | 27,321.84 |  |

Notes:
- C-MEP-FF-1764: Expenses: 1 45406.9
- C-MEP-FF-1784: Expenses: 1 5280.67
- C-MEP-FF-1774: Expenses: 1 18427.3
- C-MEP-FF-1794: Expenses: 1 64097.4
- C-MEP-PD-2205: Expenses: 1 83874.1
- C-MEP-PD-2215: Expenses: 1 30204.4
- C-MEP-PD-2225: Expenses: 1 9573.63
- C-MEP-PD-2235: Expenses: 1 1651.42
- C-MEP-PD-2245: Expenses: 1 13120.3
- C-ELV-RMS-2205: Expenses: 1 11902.8
- C-ELV-RMS-2245: Expenses: 1 2769.38
- C-ELV-RMS-2215: Expenses: 1 11902.8
- C-ELV-RMS-2225: Expenses: 1 27773.2
- C-ELV-RMS-2235: Expenses: 1 27773.2
- C-ELV-FA-2205: Expenses: 1 13660.9
- C-ELV-FA-2245: Expenses: 1 2769.38
- C-ELV-FA-2215: Expenses: 1 22768.2
- C-ELV-FA-2225: Expenses: 1 27321.8
- C-ELV-FA-2235: Expenses: 1 27321.8

| ID | WBS | Activity | Duration | Start | Finish | Predecessors | Total float | Free float | Cost | AREA |
| --- | --- | --- | --- | --- | --- | --- | --- | --- | --- | --- |
|  | 2 | **Music System & Public Address System** |  | 2016-03-19 | 2016-07-27 |  |  |  |  |  |
| C-ELV-MSPA-2205 |  | Installation of MS/PA first fix (Conduits, Boxes within block work, Gypsum Boards & Raised FLooring at level 42 | 20d | 2016-03-19 | 2016-04-10 | C-F-P-1333, C-F-P-1323, SD-CS-L42-1272, C-ELV-MSPA-2055 SS | 40d | 0d | 6,994.34 | GEN |
| C-ELV-MSPA-2245 |  | Installation of Cable Trays & Truncking at level 42 | 25d | 2016-04-05 | 2016-05-03 | C-ELV-RMS-2245 SS+5d | 19d | 0d | 2,769.38 |  |
| C-ELV-MSPA-2215 |  | Installation of second fix (Cabling & Wirring etc..) at level 42 | 25d | 2016-05-04 | 2016-06-01 | C-ELV-MSPA-2205, C-ELV-MSPA-2245 | 20d | 0d | 6,994.34 | GEN |
| C-ELV-MSPA-2225 |  | Installation & Connection of speakers, Amplifier & Controller at level 42 | 25d | 2016-06-02 | 2016-06-30 | C-ELV-MSPA-2215 | 20d | 0d | 16,320.12 | GEN |
| C-ELV-MSPA-2235 |  | Installtion & Connection of Media hub, panels and processor at level 42 | 20d | 2016-07-02 | 2016-07-27 | C-ELV-MSPA-2225, C-ELV-MSPA-2085 SS | 141d | 0d | 16,320.12 |  |
|  | 3 | **IP CCTV & Access Control System** |  | 2016-03-19 | 2016-08-06 |  |  |  |  |  |
| C-ELV-CCTV-2205 |  | Installation of CCTV first Fix Conduits, Boxes within block work, Gypsum Boards & Raised FLooring at level 42 | 20d | 2016-03-19 | 2016-04-10 | C-F-P-1333, C-F-P-1323, SD-CS-L42-1312, C-ELV-CCTV-2055 SS | 51d | 0d | 8,161.35 | GEN |
| C-ELV-CCTV-2245 |  | Installation of Cable Trays & Truncking at level 42 | 25d | 2016-04-17 | 2016-05-15 | C-ELV-FA-2245 SS+5d | 19d | 0d | 2,769.38 |  |
| C-ELV-CCTV-2215 |  | Installation of second fix (Cabling & Wirring etc..) at level 42 | 20d | 2016-05-16 | 2016-06-07 | C-ELV-CCTV-2205, C-ELV-CCTV-2245 | 22d | 0d | 19,043.14 | GEN |
| C-ELV-CCTV-2225 |  | Installation & Connection of Camera's & Alarms at level 42 | 18d | 2016-06-08 | 2016-06-28 | C-ELV-CCTV-2215 | 22d | 3d | 183,698.91 | GEN |
| C-ELV-CCTV-2235 |  | Installtion & Connection of Racks, Panels etc... at level 42 | 25d | 2016-07-09 | 2016-08-06 | C-ELV-CCTV-2225 FF, C-ELV-CCTV-2085 SS | 123d | 0d | 7,322.52 |  |
|  | 7 | **Communication System** |  | 2016-03-19 | 2016-08-29 |  |  |  |  |  |
| C-ELV-CS-2205 |  | Installation of CS first fix (Conduits, Boxes within block work, Gypsum Boards & Raised FLooring at level 42 | 20d | 2016-03-19 | 2016-04-10 | C-F-P-1333, C-F-P-1323, SD-CS-L42-1232, C-ELV-CS-2055 SS | 54d | 0d | 27,356.12 | GEN |
| C-ELV-CS-2245 |  | Installation of Cable Trays & Truncking at level 42 | 18d | 2016-03-24 | 2016-04-13 | C-MEP-E-2696 SS | 19d | 0d | 2,769.38 |  |
| C-ELV-CS-2215 |  | Installation of second fix (Cabling & Wirring etc..) at level 42 | 25d | 2016-04-14 | 2016-05-12 | C-ELV-CS-2205, C-ELV-CS-2245 | 62d | 0d | 82,068.35 | GEN |
| C-ELV-CS-2225 |  | Installation & Connection of Wireless Access points & IP dect phone & RJ 45 at level 42 | 25d | 2016-05-14 | 2016-06-11 | C-ELV-CS-2215 | 62d | 43d | 93,342.54 | GEN |
| C-ELV-CS-2235 |  | Installtion & Connection of Controller & Instrumentation at level 42 | 20d | 2016-08-07 | 2016-08-29 | C-ELV-CS-2225, C-ELV-CS-2085 | 137d | 0d | 223,314.69 |  |
|  | 4 | **IP, SMATV & QAM Television System** |  | 2016-03-19 | 2016-07-26 |  |  |  |  |  |
| C-ELV-SMATV-2205 |  | Installation of SMATV first Fix Conduits, Boxes within block work , Gypsum Boards & Raised FLooring at level 42 | 20d | 2016-03-19 | 2016-04-10 | C-F-P-1333, C-F-P-1323, SD-CS-L42-1332, C-ELV-SMATV-2055 SS | 36d | 0d | 4,452.18 | GEN |
| C-ELV-SMATV-2245 |  | Installation of Cable Trays & Truncking at level 42 | 25d | 2016-04-23 | 2016-05-21 | C-ELV-CCTV-2245 SS+5d | 19d | 0d | 2,769.38 |  |
| C-ELV-SMATV-2215 |  | Installation of second fix (Cabling & Wirring etc..) at level 42 | 16d | 2016-05-22 | 2016-06-08 | C-ELV-SMATV-2205, C-ELV-SMATV-2245 | 21d | 0d | 10,388.41 | GEN |
| C-ELV-SMATV-2225 |  | Installation & Connection of Outlets, switches and splitter at level 42 | 18d | 2016-06-09 | 2016-06-29 | C-ELV-SMATV-2215 | 21d | 0d | 6,537.45 | GEN |
| C-ELV-SMATV-2235 |  | Installtion & Connection of SMATV & QAM fiber & receiver at level 42 | 20d | 2016-06-30 | 2016-07-26 | C-ELV-SMATV-2225, C-ELV-SMATV-2085 SS | 142d | 0d | 2,419.21 |  |

Notes:
- C-ELV-MSPA-2205: Expenses: 1 6994.34
- C-ELV-MSPA-2245: Expenses: 1 2769.38
- C-ELV-MSPA-2215: Expenses: 1 6994.34
- C-ELV-MSPA-2225: Expenses: 1 16320.1
- C-ELV-MSPA-2235: Expenses: 1 16320.1
- C-ELV-CCTV-2205: Expenses: 1 8161.35
- C-ELV-CCTV-2245: Expenses: 1 2769.38
- C-ELV-CCTV-2215: Expenses: 1 19043.1
- C-ELV-CCTV-2225: Expenses: 1 183699
- C-ELV-CCTV-2235: Expenses: 1 7322.52
- C-ELV-CS-2205: Expenses: 1 27356.1
- C-ELV-CS-2245: Expenses: 1 2769.38
- C-ELV-CS-2215: Expenses: 1 82068.4
- C-ELV-CS-2225: Expenses: 1 93342.5
- C-ELV-CS-2235: Expenses: 1 223315
- C-ELV-SMATV-2205: Expenses: 1 4452.18
- C-ELV-SMATV-2245: Expenses: 1 2769.38
- C-ELV-SMATV-2215: Expenses: 1 10388.4
- C-ELV-SMATV-2225: Expenses: 1 6537.45
- C-ELV-SMATV-2235: Expenses: 1 2419.21

| ID | WBS | Activity | Duration | Start | Finish | Predecessors | Total float | Free float | Cost | AREA |
| --- | --- | --- | --- | --- | --- | --- | --- | --- | --- | --- |
|  | 5 | **BMS system** |  | 2016-03-19 | 2016-07-28 |  |  |  |  |  |
| C-MEP-BMS-2205 |  | Installation of BMS first Fix Conduits, Boxes within block work , Gypsum Boards & Raised FLooring at level 42 | 20d | 2016-03-19 | 2016-04-10 | C-F-P-1333, C-F-P-1323, SD-CS-L42-1212, C-MEP-BMS-2055 SS | 54d | 0d | 8,895.95 | GEN |
| C-MEP-BMS-2245 |  | Installation of Cable trays & Trunking at level 42 | 20d | 2016-04-28 | 2016-05-21 | C-ELV-SMATV-2245 SS+5d | 19d | 0d |  |  |
| C-MEP-BMS-2215 |  | Installation of BMS Cabling & Wirring at level 42 | 16d | 2016-05-22 | 2016-06-08 | C-MEP-BMS-2205, C-MEP-BMS-2245 | 19d | 0d | 11,861.27 | GEN |
| C-MEP-BMS-2225 |  | Installation & Connection of BMS Sensors, Relays, & Valves at level 42 | 20d | 2016-06-09 | 2016-07-02 | C-MEP-BMS-2215, C-MEP-PD-2235, C-MEP-PD-2225, C-MEP-FF-1774, C-MEP-AC-3588, C-MEP-AC-3568, C-MEP-AC-3578 | 19d | 0d | 14,826.58 | GEN |
| C-MEP-BMS-2235 |  | Installtion & Connection of BMS Racks, Panels etc... at level 42 | 20d | 2016-07-03 | 2016-07-28 | C-MEP-BMS-2225, C-MEP-BMS-2085 SS | 150d | 0d | 14,826.58 |  |
|  | 36 | **MEP - Level 43** |  | 2016-02-18 | 2016-12-19 |  |  |  |  |  |
|  | 1 | **Electrical** |  | 2016-03-06 | 2016-12-19 |  |  |  |  |  |
| C-MEP-E-3006 |  | Installation of first Electrical Fix Conduits, Boxes within block work & Gypsum Boards at level 43 | 20d | 2016-03-06 | 2016-03-28 | C-F-P-1503, C-MEP-E-2526 | 30d | 14d | 55,235.7 | GEN |
| C-MEP-E-3056 |  | Installation of Cable Trays & Truncking at level 43 | 18d | 2016-03-24 | 2016-04-13 | C-MEP-FF-2004 SS+10d, C-MEP-PD-2505 SS+5d, C-MEP-E-2576 | 18d | 0d | 21,017.55 |  |
| C-MEP-E-3016 |  | Installation of Electrical Second Fix (Cabling & Wirring etc..). at level 43 | 18d | 2016-04-14 | 2016-05-04 | C-MEP-E-3006, C-MEP-E-3056, C-MEP-E-2536 | 18d | 0d | 190,528.33 | GEN |
| C-MEP-E-3026 |  | Installation & Connection of Electrical DB's, SMDB's at level 43 | 16d | 2016-05-05 | 2016-05-23 | C-MEP-E-3016, C-MEP-E-2126 SS | 20d | 0d | 78,921.15 | GEN |
| C-MEP-E-3046 |  | Installation & Connection of Lighting Fixtures & Sockets at level 43 | 14d | 2016-12-03 | 2016-12-19 | C-MEP-E-3016, C-F-CF-3537, C-F-CF-3527, C-F-WF-2014, C-F-WF-2024, C-MEP-E-2326, C-F-P-LSF-732 FF | 87d | 18d | 71,857.69 | GEN |
|  | 2 | **HVAC** |  | 2016-02-18 | 2016-11-30 |  |  |  |  |  |
| C-MEP-AC-4008 |  | Installation of Ductwork, Insulation & Dampers at level 43 | 23d | 2016-02-18 | 2016-03-15 | C-F-P-1503 SS, C-MEP-AC-3048, SD-CS-L43-1032 | 23d | 0d | 140,612.08 | GEN |
| C-MEP-AC-4028 |  | Installation of Chilled Water Pipes & Valves at level 43 | 25d | 2016-03-01 | 2016-03-29 | C-MEP-AC-4008 SS+10d, C-MEP-AC-2908 | 68d | 0d | 30,741.92 | GEN |
| C-MEP-AC-4068 |  | Installation of HVAC equipments AHU's, FCU's, ERU's, VAV's, CAV's & Fans at level 43 | 25d | 2016-03-15 | 2016-04-12 | C-MEP-AC-4058 FF, C-MEP-AC-4048 FF, C-MEP-AC-4008 SS | 68d | 49d | 43,982.87 | GEN |
| C-MEP-AC-4058 |  | Pressure testing of Ductwork at level 43 | 8d | 2016-03-26 | 2016-04-03 | C-MEP-AC-4008, C-MEP-AC-3578 | 62d | 0d |  | GEN |
| C-MEP-AC-4048 |  | Pressure testing & Insulation of Chilled Water Pipes at level 43 | 12d | 2016-03-30 | 2016-04-12 | C-MEP-AC-4028 | 68d | 0d | 8,821.1 | GEN |
| C-MEP-AC-4018 |  | Installation of Silencers, Attenuators, Isolators & Detectors at level 43 | 12d | 2016-04-04 | 2016-04-17 | C-MEP-AC-4058 | 84d | 65d | 28,274.51 | GEN |
| C-MEP-AC-4038 |  | Installation of Chilled Water Pipes Control Devices & Isolator at level 43 | 8d | 2016-04-13 | 2016-04-21 | C-MEP-AC-4048 | 80d | 61d | 2,889.38 | GEN |
| C-MEP-AC-4078 |  | Installation of Grilles, Diffusers & Controller at level 43 | 12d | 2016-11-17 | 2016-11-30 | C-MEP-AC-4068, C-F-CF-3537, C-F-CF-3527, C-F-WF-2024 FF, C-F-CF-3527 FF, C-F-WF-2014 FF, C-MEP-AC-3118 | 76d | 21d | 55,880.87 | GEN |
|  | 3 | **Fire Fighting** |  | 2016-03-01 | 2016-08-20 |  |  |  |  |  |
| C-MEP-FF-2004 |  | Installation of FIre fighting Pipes at level 43 | 25d | 2016-03-01 | 2016-03-29 | C-MEP-AC-4008 SS+10d, SD-CS-L43-1052 | 28d | 0d | 45,406.88 | GEN |
| C-MEP-FF-2024 |  | Pressure testing of fire fighting pipes at level 43 | 8d | 2016-03-30 | 2016-04-07 | C-MEP-FF-2004 | 52d | 0d | 5,280.67 | GEN |
| C-MEP-FF-2014 |  | Installation of fire Fighting Valves at level 43 | 20d | 2016-04-09 | 2016-05-01 | C-MEP-FF-2024 | 52d | 33d | 18,427.34 | GEN |
| C-MEP-FF-2034 |  | Installation of Fire Fighting Sprinklers & Fire hose Cabinets & Extinguishers at level 43 | 14d | 2016-08-04 | 2016-08-20 | C-MEP-FF-2014, C-F-CF-3527, C-F-CF-3517, C-MEP-FF-2024 | 83d | 0d | 64,097.37 | GEN |

Notes:
- C-MEP-BMS-2205: Expenses: 1 8895.95
- C-MEP-BMS-2215: Expenses: 1 11861.3
- C-MEP-BMS-2225: Expenses: 1 14826.6
- C-MEP-BMS-2235: Expenses: 1 14826.6
- C-MEP-E-3006: Expenses: 1 55235.7
- C-MEP-E-3056: Expenses: 1 21017.5
- C-MEP-E-3016: Expenses: 1 57962.7; 2 132566
- C-MEP-E-3026: Expenses: 1 78921.1
- C-MEP-E-3046: Expenses: 1 71857.7
- C-MEP-AC-4008: Expenses: 1 140612
- C-MEP-AC-4028: Expenses: 1 30741.9
- C-MEP-AC-4068: Expenses: 1 43982.9
- C-MEP-AC-4048: Expenses: 1 8821.1
- C-MEP-AC-4018: Expenses: 1 28274.5
- C-MEP-AC-4038: Expenses: 1 2889.38
- C-MEP-AC-4078: Expenses: 1 55880.9
- C-MEP-FF-2004: Expenses: 1 45406.9
- C-MEP-FF-2024: Expenses: 1 5280.67
- C-MEP-FF-2014: Expenses: 1 18427.3
- C-MEP-FF-2034: Expenses: 1 64097.4

| ID | WBS | Activity | Duration | Start | Finish | Predecessors | Total float | Free float | Cost | AREA |
| --- | --- | --- | --- | --- | --- | --- | --- | --- | --- | --- |
|  | 4 | **Plumbing & Drainage** |  | 2016-03-19 | 2016-11-28 |  |  |  |  |  |
| C-MEP-PD-2505 |  | Installation of Water Pipes & Valves (Hot & Cold atc..) at level 43 | 20d | 2016-03-19 | 2016-04-10 | C-MEP-FF-2004 SS, C-F-P-1513, SD-CS-L43-1092 | 18d | 0d | 83,874.06 | GEN |
| C-MEP-PD-2515 |  | Installation drainage Pipes at level 43 | 25d | 2016-03-19 | 2016-04-16 | C-MEP-PD-2505 SS | 57d | 0d | 30,204.4 | GEN |
| C-MEP-PD-2525 |  | Pressure testing & Insullation of water pipes at level 43 | 8d | 2016-04-11 | 2016-04-19 | C-MEP-PD-2505 | 62d | 43d | 9,573.63 | GEN |
| C-MEP-PD-2535 |  | Pressure testing of drainage pipes at level 43 | 8d | 2016-04-17 | 2016-04-25 | C-MEP-PD-2515 | 57d | 38d | 1,651.42 | GEN |
| C-MEP-PD-2545 |  | Installation of Outlets, Drains, Gullies, Cowls, & Clean out at level 43 | 20d | 2016-11-06 | 2016-11-28 | C-MEP-PD-2525, C-MEP-PD-2525 FF, C-F-FF-2014, C-F-WF-2014, C-F-FF-2014 FF, C-F-WF-2034, C-F-WF-2014 FF, C-F-DW-2014, C-MEP-PD-1895, C-F-P-LSF-732 FF | 100d | 18d | 13,120.28 | GEN |
|  | 7 | **ELV systems** |  | 2016-03-19 | 2016-08-29 |  |  |  |  |  |
|  | 1 | **Room Management System** |  | 2016-03-19 | 2016-07-24 |  |  |  |  |  |
| C-ELV-RMS-2505 |  | Installation of RMS first fix (Conduits, Boxes within block work , Gypsum Boards & Raised FLooring at level 43 | 20d | 2016-03-19 | 2016-04-10 | C-F-P-1513, C-F-P-1503, SD-CS-L43-1272, C-ELV-RMS-2205 SS | 40d | 4d | 11,902.78 | GEN |
| C-ELV-RMS-2545 |  | Installation of Cable Trays & Truncking at level 43 | 18d | 2016-03-30 | 2016-04-19 | C-ELV-CS-2545 SS+5d | 19d | 0d | 2,769.38 |  |
| C-ELV-RMS-2515 |  | Installation of second fix (Cabling & Wirring etc..) at level 43 | 25d | 2016-04-20 | 2016-05-18 | C-ELV-RMS-2505, C-ELV-RMS-2545 | 32d | 0d | 11,902.78 | GEN |
| C-ELV-RMS-2525 |  | Installation & Connection of ethernets & HVAC thermostates etc.. at level 43 | 25d | 2016-05-19 | 2016-06-16 | C-ELV-RMS-2515 | 32d | 9d | 27,773.16 | GEN |
| C-ELV-RMS-2535 |  | Installtion & Connection of Panels, Controller, switches, server etc..) at level 43 | 20d | 2016-06-28 | 2016-07-24 | C-ELV-RMS-2525, C-ELV-RMS-2235 SS | 144d | 2d | 27,773.16 |  |
|  | 12 | **Fire Alarm & Detection System** |  | 2016-03-19 | 2016-07-27 |  |  |  |  |  |
| C-ELV-FA-2505 |  | Installation of FA first Fix Conduits, Boxes within block work , Gypsum Boards & Raised FLooring at level 43 | 20d | 2016-03-19 | 2016-04-10 | C-F-P-1513, C-F-P-1503, C-ELV-FA-2205 SS | 44d | 0d | 13,660.92 | GEN |
| C-ELV-FA-2545 |  | Installation of Cable Trays & Truncking at level 43 | 18d | 2016-04-11 | 2016-05-01 | C-ELV-MSPA-2545 SS+5d, SD-CS-L43-1312 | 19d | 0d | 2,769.38 |  |
| C-ELV-FA-2515 |  | Installation of second fix (Cabling & Wirring etc..) at level 43 | 20d | 2016-05-02 | 2016-05-24 | C-ELV-FA-2505, C-ELV-FA-2545 | 27d | 0d | 22,768.2 | GEN |
| C-ELV-FA-2525 |  | Installation & Connection of heat detector, smoke detector, flame detector etc.. at level 43 | 25d | 2016-05-25 | 2016-06-22 | C-ELV-FA-2515 | 27d | 7d | 27,321.84 | GEN |
| C-ELV-FA-2535 |  | Installtion & Connection of Racks & Panels at level 43 | 20d | 2016-07-02 | 2016-07-27 | C-ELV-FA-2525, C-ELV-FA-2235 SS | 141d | 0d | 27,321.84 |  |
|  | 2 | **Music System & Public Address System** |  | 2016-03-19 | 2016-07-27 |  |  |  |  |  |
| C-ELV-MSPA-2505 |  | Installation of MS/PA first fix (Conduits, Boxes within block work, Gypsum Boards & Raised FLooring at level 43 | 20d | 2016-03-19 | 2016-04-10 | C-F-P-1513, C-F-P-1503, SD-CS-L43-1292, C-ELV-MSPA-2205 SS | 40d | 0d | 6,994.34 | GEN |
| C-ELV-MSPA-2545 |  | Installation of Cable Trays & Truncking at level 43 | 18d | 2016-04-05 | 2016-04-25 | C-ELV-RMS-2545 SS+5d | 19d | 0d | 2,769.38 |  |
| C-ELV-MSPA-2515 |  | Installation of second fix (Cabling & Wirring etc..) at level 43 | 25d | 2016-04-26 | 2016-05-24 | C-ELV-MSPA-2505, C-ELV-MSPA-2545 | 27d | 0d | 6,994.34 | GEN |
| C-ELV-MSPA-2525 |  | Installation & Connection of speakers, Amplifier & Controller at level 43 | 25d | 2016-05-25 | 2016-06-22 | C-ELV-MSPA-2515 | 27d | 7d | 16,320.12 | GEN |
| C-ELV-MSPA-2535 |  | Installtion & Connection of Media hub, panels and processor at level 43 | 20d | 2016-07-02 | 2016-07-27 | C-ELV-MSPA-2525, C-ELV-MSPA-2235 SS | 141d | 0d | 16,320.12 |  |

Notes:
- C-MEP-PD-2505: Expenses: 1 83874.1
- C-MEP-PD-2515: Expenses: 1 30204.4
- C-MEP-PD-2525: Expenses: 1 9573.63
- C-MEP-PD-2535: Expenses: 1 1651.42
- C-MEP-PD-2545: Expenses: 1 13120.3
- C-ELV-RMS-2505: Expenses: 1 11902.8
- C-ELV-RMS-2545: Expenses: 1 2769.38
- C-ELV-RMS-2515: Expenses: 1 11902.8
- C-ELV-RMS-2525: Expenses: 1 27773.2
- C-ELV-RMS-2535: Expenses: 1 27773.2
- C-ELV-FA-2505: Expenses: 1 13660.9
- C-ELV-FA-2545: Expenses: 1 2769.38
- C-ELV-FA-2515: Expenses: 1 22768.2
- C-ELV-FA-2525: Expenses: 1 27321.8
- C-ELV-FA-2535: Expenses: 1 27321.8
- C-ELV-MSPA-2505: Expenses: 1 6994.34
- C-ELV-MSPA-2545: Expenses: 1 2769.38
- C-ELV-MSPA-2515: Expenses: 1 6994.34
- C-ELV-MSPA-2525: Expenses: 1 16320.1
- C-ELV-MSPA-2535: Expenses: 1 16320.1

| ID | WBS | Activity | Duration | Start | Finish | Predecessors | Total float | Free float | Cost | AREA |
| --- | --- | --- | --- | --- | --- | --- | --- | --- | --- | --- |
|  | 3 | **IP CCTV & Access Control System** |  | 2016-03-19 | 2016-08-06 |  |  |  |  |  |
| C-ELV-CCTV-2505 |  | Installation of CCTV first Fix Conduits, Boxes within block work, Gypsum Boards & Raised FLooring at level 43 | 20d | 2016-03-19 | 2016-04-10 | C-F-P-1513, C-F-P-1503, SD-CS-L43-1332, C-ELV-CCTV-2205 SS | 51d | 0d | 8,161.35 | GEN |
| C-ELV-CCTV-2545 |  | Installation of Cable Trays & Truncking at level 43 | 18d | 2016-04-17 | 2016-05-07 | C-ELV-FA-2545 SS+5d | 19d | 0d | 2,769.38 |  |
| C-ELV-CCTV-2515 |  | Installation of second fix (Cabling & Wirring etc..) at level 43 | 20d | 2016-05-08 | 2016-05-30 | C-ELV-CCTV-2505, C-ELV-CCTV-2545 | 29d | 0d | 19,043.14 | GEN |
| C-ELV-CCTV-2525 |  | Installation & Connection of Camera's & Alarms at level 43 | 18d | 2016-05-31 | 2016-06-20 | C-ELV-CCTV-2515 | 29d | 10d | 183,698.91 | GEN |
| C-ELV-CCTV-2535 |  | Installtion & Connection of Racks, Panels etc... at level 43 | 25d | 2016-07-09 | 2016-08-06 | C-ELV-CCTV-2525 FF, C-ELV-CCTV-2235 SS | 123d | 0d | 7,322.52 |  |
|  | 7 | **Communication System** |  | 2016-03-19 | 2016-08-29 |  |  |  |  |  |
| C-ELV-CS-2505 |  | Installation of CS first fix (Conduits, Boxes within block work, Gypsum Boards & Raised FLooring at level 43 | 20d | 2016-03-19 | 2016-04-10 | C-F-P-1513, C-F-P-1503, SD-CS-L43-1252, C-ELV-CS-2205 SS | 54d | 0d | 27,356.12 | GEN |
| C-ELV-CS-2545 |  | Installation of Cable Trays & Truncking at level 43 | 18d | 2016-03-24 | 2016-04-13 | C-MEP-E-3056 SS | 19d | 0d | 2,769.38 |  |
| C-ELV-CS-2515 |  | Installation of second fix (Cabling & Wirring etc..) at level 43 | 25d | 2016-04-14 | 2016-05-12 | C-ELV-CS-2505, C-ELV-CS-2545 | 62d | 0d | 82,068.35 | GEN |
| C-ELV-CS-2525 |  | Installation & Connection of Wireless Access points & IP dect phone & RJ 45 at level 43 | 25d | 2016-05-14 | 2016-06-11 | C-ELV-CS-2515 | 62d | 43d | 93,342.54 | GEN |
| C-ELV-CS-2535 |  | Installtion & Connection of Controller & Instrumentation at level 43 | 20d | 2016-08-07 | 2016-08-29 | C-ELV-CS-2525, C-ELV-CS-2235 SS | 137d | 0d | 223,314.69 |  |
|  | 4 | **IP, SMATV & QAM Television System** |  | 2016-04-11 | 2016-07-26 |  |  |  |  |  |
| C-ELV-SMATV-2505 |  | Installation of SMATV first Fix Conduits, Boxes within block work , Gypsum Boards & Raised FLooring at level 43 | 20d | 2016-04-11 | 2016-05-03 | C-F-P-1513, C-F-P-1503, SD-CS-L43-1352, C-ELV-SMATV-2205 | 36d | 0d | 4,452.18 | GEN |
| C-ELV-SMATV-2545 |  | Installation of Cable Trays & Truncking at level 43 | 18d | 2016-04-23 | 2016-05-12 | C-ELV-CCTV-2545 SS+5d | 19d | 0d | 2,769.38 |  |
| C-ELV-SMATV-2515 |  | Installation of second fix (Cabling & Wirring etc..) at level 43 | 16d | 2016-05-14 | 2016-05-31 | C-ELV-SMATV-2505, C-ELV-SMATV-2545 | 28d | 0d | 10,388.41 | GEN |
| C-ELV-SMATV-2525 |  | Installation & Connection of Outlets, switches and splitter at level 43 | 18d | 2016-06-01 | 2016-06-21 | C-ELV-SMATV-2515 | 28d | 7d | 6,537.45 | GEN |
| C-ELV-SMATV-2535 |  | Installtion & Connection of SMATV & QAM fiber & receiver at level 43 | 20d | 2016-06-30 | 2016-07-26 | C-ELV-SMATV-2525, C-ELV-SMATV-2235 SS | 142d | 0d | 2,419.21 |  |
|  | 5 | **BMS system** |  | 2016-03-19 | 2016-07-28 |  |  |  |  |  |
| C-MEP-BMS-2505 |  | Installation of BMS first Fix Conduits, Boxes within block work , Gypsum Boards & Raised FLooring at level 43 | 20d | 2016-03-19 | 2016-04-10 | C-F-P-1513, C-F-P-1503, SD-CS-L43-1232, C-MEP-BMS-2205 SS | 54d | 4d | 8,895.95 | GEN |
| C-MEP-BMS-2545 |  | Installation of Cable trays & Trunking at level 43 | 20d | 2016-04-28 | 2016-05-21 | C-ELV-SMATV-2545 SS+5d | 19d | 0d |  |  |
| C-MEP-BMS-2515 |  | Installation of BMS Cabling & Wirring at level 43 | 16d | 2016-05-22 | 2016-06-08 | C-MEP-BMS-2505, C-MEP-BMS-2545 | 19d | 0d | 11,861.27 | GEN |
| C-MEP-BMS-2525 |  | Installation & Connection of BMS Sensors, Relays, & Valves at level 43 | 20d | 2016-06-09 | 2016-07-02 | C-MEP-BMS-2515, C-MEP-PD-2535, C-MEP-PD-2525, C-MEP-FF-2014, C-MEP-AC-4068, C-MEP-AC-4048, C-MEP-AC-4058 | 19d | 0d | 14,826.58 | GEN |
| C-MEP-BMS-2535 |  | Installtion & Connection of BMS Racks, Panels etc... at level 43 | 20d | 2016-07-03 | 2016-07-28 | C-MEP-BMS-2525, C-MEP-BMS-2235 SS | 150d | 4d | 14,826.58 |  |

Notes:
- C-ELV-CCTV-2505: Expenses: 1 8161.35
- C-ELV-CCTV-2545: Expenses: 1 2769.38
- C-ELV-CCTV-2515: Expenses: 1 19043.1
- C-ELV-CCTV-2525: Expenses: 1 183699
- C-ELV-CCTV-2535: Expenses: 1 7322.52
- C-ELV-CS-2505: Expenses: 1 27356.1
- C-ELV-CS-2545: Expenses: 1 2769.38
- C-ELV-CS-2515: Expenses: 1 82068.4
- C-ELV-CS-2525: Expenses: 1 93342.5
- C-ELV-CS-2535: Expenses: 1 223315
- C-ELV-SMATV-2505: Expenses: 1 4452.18
- C-ELV-SMATV-2545: Expenses: 1 2769.38
- C-ELV-SMATV-2515: Expenses: 1 10388.4
- C-ELV-SMATV-2525: Expenses: 1 6537.45
- C-ELV-SMATV-2535: Expenses: 1 2419.21
- C-MEP-BMS-2505: Expenses: 1 8895.95
- C-MEP-BMS-2515: Expenses: 1 11861.3
- C-MEP-BMS-2525: Expenses: 1 14826.6
- C-MEP-BMS-2535: Expenses: 1 14826.6

| ID | WBS | Activity | Duration | Start | Finish | Predecessors | Total float | Free float | Cost | AREA |
| --- | --- | --- | --- | --- | --- | --- | --- | --- | --- | --- |
|  | 35 | **MEP - Level 44** |  | 2016-02-23 | 2016-12-26 |  |  |  |  |  |
|  | 1 | **Electrical** |  | 2016-03-10 | 2016-12-26 |  |  |  |  |  |
| C-MEP-E-2766 |  | Installation of first Electrical Fix Conduits, Boxes within block work & Gypsum Boards at level 44 | 20d | 2016-03-10 | 2016-04-02 | C-F-P-1383, C-MEP-E-2226 | 44d | 14d | 55,235.7 | GEN |
| C-MEP-E-2816 |  | Installation of Cable Trays & Truncking at level 44 | 18d | 2016-03-29 | 2016-04-18 | C-MEP-FF-1844 SS+10d, C-MEP-PD-2305 SS+5d, C-MEP-E-2276 | 30d | 0d | 21,017.55 |  |
| C-MEP-E-2776 |  | Installation of Electrical Second Fix (Cabling & Wirring etc..). at level 44 | 18d | 2016-04-19 | 2016-05-09 | C-MEP-E-2766, C-MEP-E-2816, C-MEP-E-2236 | 30d | 0d | 190,528.33 | GEN |
| C-MEP-E-2786 |  | Installation & Connection of Electrical DB's, SMDB's at level 44 | 16d | 2016-05-10 | 2016-05-28 | C-MEP-E-2776, C-MEP-E-2366 SS | 30d | 0d | 78,921.15 | GEN |
| C-MEP-E-2806 |  | Installation & Connection of Lighting Fixtures & Sockets at level 44 | 14d | 2016-12-10 | 2016-12-26 | C-MEP-E-2776, C-F-CF-3257, C-F-CF-3247, C-F-WF-1854, C-F-WF-1864, C-MEP-E-2446, C-F-P-LSF-812 FF | 91d | 20d | 71,857.69 | GEN |
|  | 2 | **HVAC** |  | 2016-02-23 | 2016-12-06 |  |  |  |  |  |
| C-MEP-AC-3688 |  | Installation of Ductwork, Insulation & Dampers at level 44 | 23d | 2016-02-23 | 2016-03-20 | C-F-P-1383 SS, C-MEP-AC-3208, SD-CS-L44-1052 | 37d | 0d | 140,612.08 | GEN |
| C-MEP-AC-3708 |  | Installation of Chilled Water Pipes & Valves at level 44 | 25d | 2016-03-06 | 2016-04-03 | C-MEP-AC-3688 SS+10d, C-MEP-AC-3388 | 84d | 0d | 30,741.92 | GEN |
| C-MEP-AC-3748 |  | Installation of HVAC equipments AHU's, FCU's, ERU's, VAV's, CAV's & Fans at level 44 | 25d | 2016-03-20 | 2016-04-17 | C-MEP-AC-3738 FF, C-MEP-AC-3728 FF, C-MEP-AC-3688 SS | 84d | 49d | 89,580.19 | GEN |
| C-MEP-AC-3728 |  | Pressure testing & Insulation of Chilled Water Pipes at level 44 | 12d | 2016-04-04 | 2016-04-17 | C-MEP-AC-3708 | 84d | 0d | 8,821.1 | GEN |
| C-MEP-AC-3738 |  | Pressure testing of Ductwork at level 44 | 8d | 2016-04-04 | 2016-04-12 | C-MEP-AC-3688, C-MEP-AC-4058 | 62d | 0d |  | GEN |
| C-MEP-AC-3698 |  | Installation of Silencers, Attenuators, Isolators & Detectors at level 44 | 12d | 2016-04-13 | 2016-04-26 | C-MEP-AC-3738 | 96d | 61d | 28,274.51 | GEN |
| C-MEP-AC-3718 |  | Installation of Chilled Water Pipes Control Devices & Isolator at level 44 | 8d | 2016-04-18 | 2016-04-26 | C-MEP-AC-3728 | 96d | 61d | 2,889.38 | GEN |
| C-MEP-AC-3758 |  | Installation of Grilles, Diffusers & Controller at level 44 | 12d | 2016-11-23 | 2016-12-06 | C-MEP-AC-3748, C-F-CF-3257, C-F-CF-3247, C-F-WF-1864 FF, C-F-CF-3247 FF, C-F-WF-1854 FF, C-MEP-AC-3278 | 71d | 24d | 55,880.87 | GEN |
|  | 3 | **Fire Fighting** |  | 2016-03-06 | 2016-08-24 |  |  |  |  |  |
| C-MEP-FF-1844 |  | Installation of FIre fighting Pipes at level 44 | 25d | 2016-03-06 | 2016-04-03 | C-MEP-AC-3688 SS+10d, SD-CS-L44-1072 | 40d | 0d | 45,406.88 | GEN |
| C-MEP-FF-1864 |  | Pressure testing of fire fighting pipes at level 44 | 8d | 2016-04-04 | 2016-04-12 | C-MEP-FF-1844 | 68d | 0d | 5,280.67 | GEN |
| C-MEP-FF-1854 |  | Installation of fire Fighting Valves at level 44 | 20d | 2016-04-13 | 2016-05-05 | C-MEP-FF-1864 | 68d | 33d | 18,427.34 | GEN |
| C-MEP-FF-1874 |  | Installation of Fire Fighting Sprinklers & Fire hose Cabinets & Extinguishers at level 44 | 14d | 2016-08-09 | 2016-08-24 | C-MEP-FF-1854, C-F-CF-3247, C-F-CF-3237, C-MEP-FF-1864 | 94d | 0d | 64,097.37 | GEN |
|  | 4 | **Plumbing & Drainage** |  | 2016-03-23 | 2016-12-03 |  |  |  |  |  |
| C-MEP-PD-2305 |  | Installation of Water Pipes & Valves (Hot & Cold atc..) at level 44 | 20d | 2016-03-23 | 2016-04-14 | C-MEP-FF-1844 SS, C-F-P-1393, SD-CS-L44-1112 | 30d | 0d | 83,874.06 | GEN |
| C-MEP-PD-2315 |  | Installation drainage Pipes at level 44 | 25d | 2016-03-23 | 2016-04-20 | C-MEP-PD-2305 SS | 73d | 0d | 30,204.4 | GEN |
| C-MEP-PD-2325 |  | Pressure testing & Insullation of water pipes at level 44 | 8d | 2016-04-16 | 2016-04-24 | C-MEP-PD-2305 | 78d | 43d | 9,573.63 | GEN |
| C-MEP-PD-2335 |  | Pressure testing of drainage pipes at level 44 | 8d | 2016-04-21 | 2016-04-30 | C-MEP-PD-2315 | 73d | 38d | 1,651.42 | GEN |
| C-MEP-PD-2345 |  | Installation of Outlets, Drains, Gullies, Cowls, & Clean out at level 44 | 20d | 2016-11-10 | 2016-12-03 | C-MEP-PD-2325, C-MEP-PD-2325 FF, C-F-FF-1854, C-F-WF-1854, C-F-FF-1854 FF, C-F-WF-1874, C-F-WF-1854 FF, C-F-DW-1854, C-MEP-PD-1945, C-F-P-LSF-812 FF | 106d | 13d | 13,120.28 | GEN |

Notes:
- C-MEP-E-2766: Expenses: 1 55235.7
- C-MEP-E-2816: Expenses: 1 21017.5
- C-MEP-E-2776: Expenses: 1 57962.7; 2 132566
- C-MEP-E-2786: Expenses: 1 78921.1
- C-MEP-E-2806: Expenses: 1 71857.7
- C-MEP-AC-3688: Expenses: 1 140612
- C-MEP-AC-3708: Expenses: 1 30741.9
- C-MEP-AC-3748: Expenses: 1 89580.2
- C-MEP-AC-3728: Expenses: 1 8821.1
- C-MEP-AC-3698: Expenses: 1 28274.5
- C-MEP-AC-3718: Expenses: 1 2889.38
- C-MEP-AC-3758: Expenses: 1 55880.9
- C-MEP-FF-1844: Expenses: 1 45406.9
- C-MEP-FF-1864: Expenses: 1 5280.67
- C-MEP-FF-1854: Expenses: 1 18427.3
- C-MEP-FF-1874: Expenses: 1 64097.4
- C-MEP-PD-2305: Expenses: 1 83874.1
- C-MEP-PD-2315: Expenses: 1 30204.4
- C-MEP-PD-2325: Expenses: 1 9573.63
- C-MEP-PD-2335: Expenses: 1 1651.42
- C-MEP-PD-2345: Expenses: 1 13120.3

| ID | WBS | Activity | Duration | Start | Finish | Predecessors | Total float | Free float | Cost | AREA |
| --- | --- | --- | --- | --- | --- | --- | --- | --- | --- | --- |
|  | 7 | **ELV systems** |  | 2016-03-23 | 2016-09-04 |  |  |  |  |  |
|  | 1 | **Room Management System** |  | 2016-03-23 | 2016-07-26 |  |  |  |  |  |
| C-ELV-RMS-2305 |  | Installation of RMS first fix (Conduits, Boxes within block work , Gypsum Boards & Raised FLooring at level 44 | 20d | 2016-03-23 | 2016-04-14 | C-F-P-1393, C-F-P-1383, SD-CS-L44-1292, C-ELV-RMS-2505 SS | 55d | 13d | 11,902.78 | GEN |
| C-ELV-RMS-2345 |  | Installation of Cable Trays & Truncking at level 44 | 25d | 2016-04-04 | 2016-05-02 | C-ELV-CS-2345 SS+5d | 35d | 0d | 2,769.38 |  |
| C-ELV-RMS-2315 |  | Installation of second fix (Cabling & Wirring etc..) at level 44 | 25d | 2016-05-03 | 2016-05-31 | C-ELV-RMS-2305, C-ELV-RMS-2345 | 41d | 0d | 11,902.78 | GEN |
| C-ELV-RMS-2325 |  | Installation & Connection of ethernets & HVAC thermostates etc.. at level 44 | 25d | 2016-06-01 | 2016-06-29 | C-ELV-RMS-2315 | 41d | 0d | 27,773.16 | GEN |
| C-ELV-RMS-2335 |  | Installtion & Connection of Panels, Controller, switches, server etc..) at level 44 | 20d | 2016-06-30 | 2016-07-26 | C-ELV-RMS-2325, C-ELV-RMS-2535 SS | 142d | 13d | 27,773.16 |  |
|  | 12 | **Fire Alarm & Detection System** |  | 2016-04-11 | 2016-08-20 |  |  |  |  |  |
| C-ELV-FA-2305 |  | Installation of FA first Fix Conduits, Boxes within block work , Gypsum Boards & Raised FLooring at level 44 | 20d | 2016-04-11 | 2016-05-03 | C-F-P-1393, C-F-P-1383, C-ELV-FA-2505 | 44d | 0d | 13,660.92 | GEN |
| C-ELV-FA-2345 |  | Installation of Cable Trays & Truncking at level 44 | 25d | 2016-04-16 | 2016-05-14 | C-ELV-MSPA-2345 SS+5d, SD-CS-L44-1332 | 35d | 0d | 2,769.38 |  |
| C-ELV-FA-2315 |  | Installation of second fix (Cabling & Wirring etc..) at level 44 | 20d | 2016-05-15 | 2016-06-06 | C-ELV-FA-2305, C-ELV-FA-2345 | 36d | 0d | 22,768.2 | GEN |
| C-ELV-FA-2325 |  | Installation & Connection of heat detector, smoke detector, flame detector etc.. at level 44 | 25d | 2016-06-07 | 2016-07-09 | C-ELV-FA-2315 | 36d | 1d | 27,321.84 | GEN |
| C-ELV-FA-2335 |  | Installtion & Connection of Racks & Panels at level 44 | 20d | 2016-07-28 | 2016-08-20 | C-ELV-FA-2325, C-ELV-FA-2535 | 141d | 0d | 27,321.84 |  |
|  | 2 | **Music System & Public Address System** |  | 2016-04-10 | 2016-08-20 |  |  |  |  |  |
| C-ELV-MSPA-2345 |  | Installation of Cable Trays & Truncking at level 44 | 25d | 2016-04-10 | 2016-05-08 | C-ELV-RMS-2345 SS+5d | 35d | 0d | 2,769.38 |  |
| C-ELV-MSPA-2305 |  | Installation of MS/PA first fix (Conduits, Boxes within block work, Gypsum Boards & Raised FLooring at level 44 | 20d | 2016-04-11 | 2016-05-03 | C-F-P-1393, C-F-P-1383, SD-CS-L44-1312, C-ELV-MSPA-2505 | 40d | 0d | 6,994.34 | GEN |
| C-ELV-MSPA-2315 |  | Installation of second fix (Cabling & Wirring etc..) at level 44 | 25d | 2016-05-09 | 2016-06-06 | C-ELV-MSPA-2305, C-ELV-MSPA-2345 | 36d | 0d | 6,994.34 | GEN |
| C-ELV-MSPA-2325 |  | Installation & Connection of speakers, Amplifier & Controller at level 44 | 25d | 2016-06-07 | 2016-07-09 | C-ELV-MSPA-2315 | 36d | 1d | 16,320.12 | GEN |
| C-ELV-MSPA-2335 |  | Installtion & Connection of Media hub, panels and processor at level 44 | 20d | 2016-07-28 | 2016-08-20 | C-ELV-MSPA-2325, C-ELV-MSPA-2535 | 141d | 0d | 16,320.12 |  |
|  | 3 | **IP CCTV & Access Control System** |  | 2016-04-11 | 2016-09-04 |  |  |  |  |  |
| C-ELV-CCTV-2305 |  | Installation of CCTV first Fix Conduits, Boxes within block work, Gypsum Boards & Raised FLooring at level 44 | 20d | 2016-04-11 | 2016-05-03 | C-F-P-1393, C-F-P-1383, SD-CS-L44-1352, C-ELV-CCTV-2505 | 51d | 0d | 8,161.35 | GEN |
| C-ELV-CCTV-2345 |  | Installation of Cable Trays & Truncking at level 44 | 25d | 2016-04-21 | 2016-05-19 | C-ELV-FA-2345 SS+5d | 35d | 0d | 2,769.38 |  |
| C-ELV-CCTV-2315 |  | Installation of second fix (Cabling & Wirring etc..) at level 44 | 20d | 2016-05-21 | 2016-06-12 | C-ELV-CCTV-2305, C-ELV-CCTV-2345 | 38d | 0d | 19,043.14 | GEN |
| C-ELV-CCTV-2325 |  | Installation & Connection of Camera's & Alarms at level 44 | 18d | 2016-06-13 | 2016-07-03 | C-ELV-CCTV-2315 | 38d | 3d | 183,698.91 | GEN |
| C-ELV-CCTV-2335 |  | Installtion & Connection of Racks, Panels etc... at level 44 | 25d | 2016-08-07 | 2016-09-04 | C-ELV-CCTV-2325 FF, C-ELV-CCTV-2535 | 123d | 0d | 7,322.52 |  |

Notes:
- C-ELV-RMS-2305: Expenses: 1 11902.8
- C-ELV-RMS-2345: Expenses: 1 2769.38
- C-ELV-RMS-2315: Expenses: 1 11902.8
- C-ELV-RMS-2325: Expenses: 1 27773.2
- C-ELV-RMS-2335: Expenses: 1 27773.2
- C-ELV-FA-2305: Expenses: 1 13660.9
- C-ELV-FA-2345: Expenses: 1 2769.38
- C-ELV-FA-2315: Expenses: 1 22768.2
- C-ELV-FA-2325: Expenses: 1 27321.8
- C-ELV-FA-2335: Expenses: 1 27321.8
- C-ELV-MSPA-2345: Expenses: 1 2769.38
- C-ELV-MSPA-2305: Expenses: 1 6994.34
- C-ELV-MSPA-2315: Expenses: 1 6994.34
- C-ELV-MSPA-2325: Expenses: 1 16320.1
- C-ELV-MSPA-2335: Expenses: 1 16320.1
- C-ELV-CCTV-2305: Expenses: 1 8161.35
- C-ELV-CCTV-2345: Expenses: 1 2769.38
- C-ELV-CCTV-2315: Expenses: 1 19043.1
- C-ELV-CCTV-2325: Expenses: 1 183699
- C-ELV-CCTV-2335: Expenses: 1 7322.52

| ID | WBS | Activity | Duration | Start | Finish | Predecessors | Total float | Free float | Cost | AREA |
| --- | --- | --- | --- | --- | --- | --- | --- | --- | --- | --- |
|  | 7 | **Communication System** |  | 2016-03-29 | 2016-08-29 |  |  |  |  |  |
| C-ELV-CS-2345 |  | Installation of Cable Trays & Truncking at level 44 | 25d | 2016-03-29 | 2016-04-26 | C-MEP-E-2816 SS | 35d | 0d | 2,769.38 |  |
| C-ELV-CS-2305 |  | Installation of CS first fix (Conduits, Boxes within block work, Gypsum Boards & Raised FLooring at level 44 | 20d | 2016-04-11 | 2016-05-03 | C-F-P-1393, C-F-P-1383, SD-CS-L44-1272, C-ELV-CS-2505 | 54d | 0d | 27,356.12 | GEN |
| C-ELV-CS-2315 |  | Installation of second fix (Cabling & Wirring etc..) at level 44 | 25d | 2016-05-04 | 2016-06-01 | C-ELV-CS-2305, C-ELV-CS-2345 | 57d | 0d | 82,068.35 | GEN |
| C-ELV-CS-2325 |  | Installation & Connection of Wireless Access points & IP dect phone & RJ 45 at level 44 | 8d | 2016-06-02 | 2016-06-11 | C-ELV-CS-2315 | 57d | 22d | 93,342.54 | GEN |
| C-ELV-CS-2335 |  | Installtion & Connection of Controller & Instrumentation at level 44 | 20d | 2016-08-07 | 2016-08-29 | C-ELV-CS-2325, C-ELV-CS-2535 SS | 153d | 0d | 223,314.69 |  |
|  | 4 | **IP, SMATV & QAM Television System** |  | 2016-04-11 | 2016-08-18 |  |  |  |  |  |
| C-ELV-SMATV-2305 |  | Installation of SMATV first Fix Conduits, Boxes within block work , Gypsum Boards & Raised FLooring at level 44 | 20d | 2016-04-11 | 2016-05-03 | C-F-P-1393, C-F-P-1383, SD-CS-L44-1372, C-ELV-SMATV-2505 SS | 55d | 0d | 4,452.18 | GEN |
| C-ELV-SMATV-2345 |  | Installation of Cable Trays & Truncking at level 44 | 25d | 2016-04-27 | 2016-05-25 | C-ELV-CCTV-2345 SS+5d | 35d | 0d | 2,769.38 |  |
| C-ELV-SMATV-2315 |  | Installation of second fix (Cabling & Wirring etc..) at level 44 | 16d | 2016-05-26 | 2016-06-13 | C-ELV-SMATV-2305, C-ELV-SMATV-2345 | 37d | 0d | 10,388.41 | GEN |
| C-ELV-SMATV-2325 |  | Installation & Connection of Outlets, switches and splitter at level 44 | 18d | 2016-06-14 | 2016-07-04 | C-ELV-SMATV-2315 | 37d | 2d | 6,537.45 | GEN |
| C-ELV-SMATV-2335 |  | Installtion & Connection of SMATV & QAM fiber & receiver at level 44 | 20d | 2016-07-27 | 2016-08-18 | C-ELV-SMATV-2325, C-ELV-SMATV-2535 | 142d | 0d | 2,419.21 |  |
|  | 5 | **BMS system** |  | 2016-03-23 | 2016-08-02 |  |  |  |  |  |
| C-MEP-BMS-2305 |  | Installation of BMS first Fix Conduits, Boxes within block work , Gypsum Boards & Raised FLooring at level 44 | 20d | 2016-03-23 | 2016-04-14 | C-F-P-1393, C-F-P-1383, SD-CS-L44-1252, C-MEP-BMS-2505 SS | 50d | 0d | 8,895.95 | GEN |
| C-MEP-BMS-2345 |  | Installation of Cable trays & Trunking at level 44 | 20d | 2016-05-03 | 2016-05-25 | C-ELV-SMATV-2345 SS+5d | 35d | 0d |  |  |
| C-MEP-BMS-2315 |  | Installation of BMS Cabling & Wirring at level 44 | 16d | 2016-05-26 | 2016-06-13 | C-MEP-BMS-2305, C-MEP-BMS-2345 | 35d | 0d | 11,861.27 | GEN |
| C-MEP-BMS-2325 |  | Installation & Connection of BMS Sensors, Relays, & Valves at level 44 | 20d | 2016-06-14 | 2016-07-10 | C-MEP-BMS-2315, C-MEP-PD-2335, C-MEP-PD-2325, C-MEP-FF-1854, C-MEP-AC-3748, C-MEP-AC-3728, C-MEP-AC-3738 | 35d | 0d | 14,826.58 | GEN |
| C-MEP-BMS-2335 |  | Installtion & Connection of BMS Racks, Panels etc... at level 44 | 20d | 2016-07-11 | 2016-08-02 | C-MEP-BMS-2325, C-MEP-BMS-2535 SS | 146d | 0d | 14,826.58 |  |
|  | 34 | **MEP - Level 45** |  | 2016-03-10 | 2017-01-11 |  |  |  |  |  |
|  | 1 | **Electrical** |  | 2016-03-27 | 2017-01-11 |  |  |  |  |  |
| C-MEP-E-2706 |  | Installation of first Electrical Fix Conduits, Boxes within block work & Gypsum Boards at level 45 | 20d | 2016-03-27 | 2016-04-18 | C-F-P-1353, C-MEP-E-2286 | 16d | 13d | 55,235.7 | GEN |
| C-MEP-E-2756 |  | Installation of Cable Trays & Truncking at level 45 | 18d | 2016-04-13 | 2016-05-03 | C-MEP-FF-1804 SS+10d, C-MEP-PD-2255 SS+5d, C-MEP-E-2336 | 3d | 0d | 21,017.55 |  |
| C-MEP-E-2716 |  | Installation of Electrical Second Fix (Cabling & Wirring etc..). at level 45 | 18d | 2016-05-04 | 2016-05-24 | C-MEP-E-2706, C-MEP-E-2756, C-MEP-E-2296 | 3d | 0d | 190,528.33 | GEN |
| C-MEP-E-2726 |  | Installation & Connection of Electrical DB's, SMDB's at level 45 | 16d | 2016-05-25 | 2016-06-12 | C-MEP-E-2716, C-MEP-E-2486 | 3d | 0d | 78,921.15 | GEN |
| C-MEP-E-2746 |  | Installation & Connection of Lighting Fixtures & Sockets at level 45 | 14d | 2016-12-27 | 2017-01-11 | C-MEP-E-2716, C-F-CF-3187, C-F-CF-3177, C-F-WF-1814, C-F-WF-1824, C-MEP-E-2146, C-F-P-LSF-742 FF | 77d | 5d | 71,857.69 | GEN |

Notes:
- C-ELV-CS-2345: Expenses: 1 2769.38
- C-ELV-CS-2305: Expenses: 1 27356.1
- C-ELV-CS-2315: Expenses: 1 82068.4
- C-ELV-CS-2325: Expenses: 1 93342.5
- C-ELV-CS-2335: Expenses: 1 223315
- C-ELV-SMATV-2305: Expenses: 1 4452.18
- C-ELV-SMATV-2345: Expenses: 1 2769.38
- C-ELV-SMATV-2315: Expenses: 1 10388.4
- C-ELV-SMATV-2325: Expenses: 1 6537.45
- C-ELV-SMATV-2335: Expenses: 1 2419.21
- C-MEP-BMS-2305: Expenses: 1 8895.95
- C-MEP-BMS-2315: Expenses: 1 11861.3
- C-MEP-BMS-2325: Expenses: 1 14826.6
- C-MEP-BMS-2335: Expenses: 1 14826.6
- C-MEP-E-2706: Expenses: 1 55235.7
- C-MEP-E-2756: Expenses: 1 21017.5
- C-MEP-E-2716: Expenses: 1 57962.7; 2 132566
- C-MEP-E-2726: Expenses: 1 78921.1
- C-MEP-E-2746: Expenses: 1 71857.7

| ID | WBS | Activity | Duration | Start | Finish | Predecessors | Total float | Free float | Cost | AREA |
| --- | --- | --- | --- | --- | --- | --- | --- | --- | --- | --- |
|  | 2 | **HVAC** |  | 2016-03-10 | 2016-12-24 |  |  |  |  |  |
| C-MEP-AC-3608 |  | Installation of Ductwork, Insulation & Dampers at level 45 | 23d | 2016-03-10 | 2016-04-05 | C-F-P-1353 SS, C-MEP-AC-2808, SD-CS-L45-1072 | 12d | 0d | 140,612.08 | GEN |
| C-MEP-AC-3628 |  | Installation of Chilled Water Pipes & Valves at level 45 | 25d | 2016-03-22 | 2016-04-19 | C-MEP-AC-3608 SS+10d, C-MEP-AC-2988 | 70d | 0d | 30,741.92 | GEN |
| C-MEP-AC-3668 |  | Installation of HVAC equipments AHU's, FCU's, ERU's, VAV's, CAV's & Fans at level 45 | 25d | 2016-04-05 | 2016-05-03 | C-MEP-AC-3658 FF, C-MEP-AC-3648 FF, C-MEP-AC-3608 SS | 70d | 48d | 58,197.86 | GEN |
| C-MEP-AC-3658 |  | Pressure testing of Ductwork at level 45 | 8d | 2016-04-13 | 2016-04-21 | C-MEP-AC-3608, C-MEP-AC-3738 | 62d | 0d |  | GEN |
| C-MEP-AC-3648 |  | Pressure testing & Insulation of Chilled Water Pipes at level 45 | 12d | 2016-04-20 | 2016-05-03 | C-MEP-AC-3628 | 70d | 0d | 8,821.1 | GEN |
| C-MEP-AC-3618 |  | Installation of Silencers, Attenuators, Isolators & Detectors at level 45 | 12d | 2016-04-23 | 2016-05-05 | C-MEP-AC-3658 | 88d | 66d | 28,274.51 | GEN |
| C-MEP-AC-3638 |  | Installation of Chilled Water Pipes Control Devices & Isolator at level 45 | 8d | 2016-05-04 | 2016-05-12 | C-MEP-AC-3648 | 82d | 60d | 2,889.38 | GEN |
| C-MEP-AC-3678 |  | Installation of Grilles, Diffusers & Controller at level 45 | 12d | 2016-12-10 | 2016-12-24 | C-MEP-AC-3668, C-F-CF-3187, C-F-CF-3177, C-F-WF-1824 FF, C-F-CF-3177 FF, C-F-WF-1814 FF, C-MEP-AC-2878 | 57d | 9d | 55,880.87 | GEN |
|  | 3 | **Fire Fighting** |  | 2016-03-22 | 2016-09-08 |  |  |  |  |  |
| C-MEP-FF-1804 |  | Installation of FIre fighting Pipes at level 45 | 25d | 2016-03-22 | 2016-04-19 | C-MEP-AC-3608 SS+10d, SD-CS-L45-1092 | 12d | 0d | 45,406.88 | GEN |
| C-MEP-FF-1824 |  | Pressure testing of fire fighting pipes at level 45 | 8d | 2016-04-20 | 2016-04-28 | C-MEP-FF-1804 | 54d | 0d | 5,280.67 | GEN |
| C-MEP-FF-1814 |  | Installation of fire Fighting Valves at level 45 | 20d | 2016-04-30 | 2016-05-22 | C-MEP-FF-1824 | 54d | 32d | 18,427.34 | GEN |
| C-MEP-FF-1834 |  | Installation of Fire Fighting Sprinklers & Fire hose Cabinets & Extinguishers at level 45 | 14d | 2016-08-24 | 2016-09-08 | C-MEP-FF-1814, C-F-CF-3177, C-F-CF-3167, C-MEP-FF-1824 | 81d | 0d | 64,097.37 | GEN |
|  | 4 | **Plumbing & Drainage** |  | 2016-04-07 | 2016-12-14 |  |  |  |  |  |
| C-MEP-PD-2255 |  | Installation of Water Pipes & Valves (Hot & Cold atc..) at level 45 | 20d | 2016-04-07 | 2016-04-30 | C-MEP-FF-1804 SS, C-F-P-1363, SD-CS-L45-1132 | 3d | 0d | 83,874.06 | GEN |
| C-MEP-PD-2265 |  | Installation drainage Pipes at level 45 | 25d | 2016-04-07 | 2016-05-05 | C-MEP-PD-2255 SS | 60d | 0d | 30,204.4 | GEN |
| C-MEP-PD-2275 |  | Pressure testing & Insullation of water pipes at level 45 | 8d | 2016-05-01 | 2016-05-09 | C-MEP-PD-2255 | 65d | 43d | 9,573.63 | GEN |
| C-MEP-PD-2285 |  | Pressure testing of drainage pipes at level 45 | 8d | 2016-05-07 | 2016-05-15 | C-MEP-PD-2265 | 60d | 38d | 1,651.42 | GEN |
| C-MEP-PD-2295 |  | Installation of Outlets, Drains, Gullies, Cowls, & Clean out at level 45 | 20d | 2016-11-22 | 2016-12-14 | C-MEP-PD-2275, C-MEP-PD-2275 FF, C-F-FF-1814, C-F-WF-1814, C-F-FF-1814 FF, C-F-WF-1834, C-F-WF-1814 FF, C-F-DW-1814, C-MEP-PD-2045, C-F-P-LSF-742 FF | 106d | 91d | 13,120.28 | GEN |
|  | 7 | **ELV systems** |  | 2016-04-07 | 2016-09-04 |  |  |  |  |  |
|  | 1 | **Room Management System** |  | 2016-04-07 | 2016-08-10 |  |  |  |  |  |
| C-ELV-RMS-2255 |  | Installation of RMS first fix (Conduits, Boxes within block work , Gypsum Boards & Raised FLooring at level 45 | 20d | 2016-04-07 | 2016-04-30 | C-F-P-1363, C-F-P-1353, SD-CS-L45-1312, C-ELV-RMS-2305 SS | 42d | 1d | 11,902.78 | GEN |
| C-ELV-RMS-2295 |  | Installation of Cable Trays & Truncking at level 45 | 25d | 2016-04-19 | 2016-05-17 | C-ELV-CS-2295 SS+5d | 22d | 0d | 2,769.38 |  |
| C-ELV-RMS-2265 |  | Installation of second fix (Cabling & Wirring etc..) at level 45 | 25d | 2016-05-18 | 2016-06-15 | C-ELV-RMS-2255, C-ELV-RMS-2295 | 28d | 0d | 11,902.78 | GEN |
| C-ELV-RMS-2275 |  | Installation & Connection of ethernets & HVAC thermostates etc.. at level 45 | 25d | 2016-06-16 | 2016-07-18 | C-ELV-RMS-2265 | 28d | 0d | 27,773.16 | GEN |
| C-ELV-RMS-2285 |  | Installtion & Connection of Panels, Controller, switches, server etc..) at level 45 | 20d | 2016-07-19 | 2016-08-10 | C-ELV-RMS-2275, C-ELV-RMS-2335 SS | 129d | 1d | 27,773.16 |  |

Notes:
- C-MEP-AC-3608: Expenses: 1 140612
- C-MEP-AC-3628: Expenses: 1 30741.9
- C-MEP-AC-3668: Expenses: 1 58197.9
- C-MEP-AC-3648: Expenses: 1 8821.1
- C-MEP-AC-3618: Expenses: 1 28274.5
- C-MEP-AC-3638: Expenses: 1 2889.38
- C-MEP-AC-3678: Expenses: 1 55880.9
- C-MEP-FF-1804: Expenses: 1 45406.9
- C-MEP-FF-1824: Expenses: 1 5280.67
- C-MEP-FF-1814: Expenses: 1 18427.3
- C-MEP-FF-1834: Expenses: 1 64097.4
- C-MEP-PD-2255: Expenses: 1 83874.1
- C-MEP-PD-2265: Expenses: 1 30204.4
- C-MEP-PD-2275: Expenses: 1 9573.63
- C-MEP-PD-2285: Expenses: 1 1651.42
- C-MEP-PD-2295: Expenses: 1 13120.3
- C-ELV-RMS-2255: Expenses: 1 11902.8
- C-ELV-RMS-2295: Expenses: 1 2769.38
- C-ELV-RMS-2265: Expenses: 1 11902.8
- C-ELV-RMS-2275: Expenses: 1 27773.2
- C-ELV-RMS-2285: Expenses: 1 27773.2

| ID | WBS | Activity | Duration | Start | Finish | Predecessors | Total float | Free float | Cost | AREA |
| --- | --- | --- | --- | --- | --- | --- | --- | --- | --- | --- |
|  | 12 | **Fire Alarm & Detection System** |  | 2016-04-11 | 2016-08-20 |  |  |  |  |  |
| C-ELV-FA-2255 |  | Installation of FA first Fix Conduits, Boxes within block work , Gypsum Boards & Raised FLooring at level 45 | 20d | 2016-04-11 | 2016-05-03 | C-F-P-1363, C-F-P-1353, C-ELV-FA-2305 SS | 44d | 0d | 13,660.92 | GEN |
| C-ELV-FA-2295 |  | Installation of Cable Trays & Truncking at level 45 | 25d | 2016-05-01 | 2016-05-29 | C-ELV-MSPA-2295 SS+5d, SD-CS-L45-1352 | 22d | 0d | 2,769.38 |  |
| C-ELV-FA-2265 |  | Installation of second fix (Cabling & Wirring etc..) at level 45 | 20d | 2016-05-30 | 2016-06-21 | C-ELV-FA-2255, C-ELV-FA-2295 | 23d | 0d | 22,768.2 | GEN |
| C-ELV-FA-2275 |  | Installation & Connection of heat detector, smoke detector, flame detector etc.. at level 45 | 25d | 2016-06-22 | 2016-07-24 | C-ELV-FA-2265 | 23d | 1d | 27,321.84 | GEN |
| C-ELV-FA-2285 |  | Installtion & Connection of Racks & Panels at level 45 | 20d | 2016-07-28 | 2016-08-20 | C-ELV-FA-2275, C-ELV-FA-2335 SS | 141d | 0d | 27,321.84 |  |
|  | 2 | **Music System & Public Address System** |  | 2016-04-11 | 2016-08-20 |  |  |  |  |  |
| C-ELV-MSPA-2255 |  | Installation of MS/PA first fix (Conduits, Boxes within block work, Gypsum Boards & Raised FLooring at level 45 | 20d | 2016-04-11 | 2016-05-03 | C-F-P-1363, C-F-P-1353, SD-CS-L45-1332, C-ELV-MSPA-2305 SS | 40d | 0d | 6,994.34 | GEN |
| C-ELV-MSPA-2295 |  | Installation of Cable Trays & Truncking at level 45 | 25d | 2016-04-25 | 2016-05-23 | C-ELV-RMS-2295 SS+5d | 22d | 0d | 2,769.38 |  |
| C-ELV-MSPA-2265 |  | Installation of second fix (Cabling & Wirring etc..) at level 45 | 25d | 2016-05-24 | 2016-06-21 | C-ELV-MSPA-2255, C-ELV-MSPA-2295 | 23d | 0d | 6,994.34 | GEN |
| C-ELV-MSPA-2275 |  | Installation & Connection of speakers, Amplifier & Controller at level 45 | 25d | 2016-06-22 | 2016-07-24 | C-ELV-MSPA-2265 | 23d | 1d | 16,320.12 | GEN |
| C-ELV-MSPA-2285 |  | Installtion & Connection of Media hub, panels and processor at level 45 | 20d | 2016-07-28 | 2016-08-20 | C-ELV-MSPA-2275, C-ELV-MSPA-2335 SS | 141d | 0d | 16,320.12 |  |
|  | 3 | **IP CCTV & Access Control System** |  | 2016-04-11 | 2016-09-04 |  |  |  |  |  |
| C-ELV-CCTV-2255 |  | Installation of CCTV first Fix Conduits, Boxes within block work, Gypsum Boards & Raised FLooring at level 45 | 20d | 2016-04-11 | 2016-05-03 | C-F-P-1363, C-F-P-1353, SD-CS-L45-1372, C-ELV-CCTV-2305 SS | 51d | 0d | 8,161.35 | GEN |
| C-ELV-CCTV-2295 |  | Installation of Cable Trays & Truncking at level 45 | 25d | 2016-05-07 | 2016-06-04 | C-ELV-FA-2295 SS+5d | 22d | 0d | 2,769.38 |  |
| C-ELV-CCTV-2265 |  | Installation of second fix (Cabling & Wirring etc..) at level 45 | 20d | 2016-06-05 | 2016-06-27 | C-ELV-CCTV-2255, C-ELV-CCTV-2295 | 25d | 0d | 19,043.14 | GEN |
| C-ELV-CCTV-2275 |  | Installation & Connection of Camera's & Alarms at level 45 | 18d | 2016-06-28 | 2016-07-21 | C-ELV-CCTV-2265 | 25d | 3d | 183,698.91 | GEN |
| C-ELV-CCTV-2285 |  | Installtion & Connection of Racks, Panels etc... at level 45 | 25d | 2016-08-07 | 2016-09-04 | C-ELV-CCTV-2275 FF, C-ELV-CCTV-2335 SS | 123d | 0d | 7,322.52 |  |
|  | 7 | **Communication System** |  | 2016-04-11 | 2016-08-29 |  |  |  |  |  |
| C-ELV-CS-2255 |  | Installation of CS first fix (Conduits, Boxes within block work, Gypsum Boards & Raised FLooring at level 45 | 20d | 2016-04-11 | 2016-05-03 | C-F-P-1363, C-F-P-1353, SD-CS-L45-1292, C-ELV-CS-2305 SS | 54d | 0d | 27,356.12 | GEN |
| C-ELV-CS-2295 |  | Installation of Cable Trays & Truncking at level 45 | 25d | 2016-04-13 | 2016-05-11 | C-MEP-E-2756 SS | 22d | 0d | 2,769.38 |  |
| C-ELV-CS-2265 |  | Installation of second fix (Cabling & Wirring etc..) at level 45 | 25d | 2016-05-12 | 2016-06-09 | C-ELV-CS-2255, C-ELV-CS-2295 | 58d | 0d | 82,068.35 | GEN |
| C-ELV-CS-2275 |  | Installation & Connection of Wireless Access points & IP dect phone & RJ 45 at level 45 | 25d | 2016-06-11 | 2016-07-12 | C-ELV-CS-2265 | 58d | 21d | 93,342.54 | GEN |
| C-ELV-CS-2285 |  | Installtion & Connection of Controller & Instrumentation at level 45 | 20d | 2016-08-07 | 2016-08-29 | C-ELV-CS-2275, C-ELV-CS-2335 SS | 153d | 0d | 223,314.69 |  |

Notes:
- C-ELV-FA-2255: Expenses: 1 13660.9
- C-ELV-FA-2295: Expenses: 1 2769.38
- C-ELV-FA-2265: Expenses: 1 22768.2
- C-ELV-FA-2275: Expenses: 1 27321.8
- C-ELV-FA-2285: Expenses: 1 27321.8
- C-ELV-MSPA-2255: Expenses: 1 6994.34
- C-ELV-MSPA-2295: Expenses: 1 2769.38
- C-ELV-MSPA-2265: Expenses: 1 6994.34
- C-ELV-MSPA-2275: Expenses: 1 16320.1
- C-ELV-MSPA-2285: Expenses: 1 16320.1
- C-ELV-CCTV-2255: Expenses: 1 8161.35
- C-ELV-CCTV-2295: Expenses: 1 2769.38
- C-ELV-CCTV-2265: Expenses: 1 19043.1
- C-ELV-CCTV-2275: Expenses: 1 183699
- C-ELV-CCTV-2285: Expenses: 1 7322.52
- C-ELV-CS-2255: Expenses: 1 27356.1
- C-ELV-CS-2295: Expenses: 1 2769.38
- C-ELV-CS-2265: Expenses: 1 82068.4
- C-ELV-CS-2275: Expenses: 1 93342.5
- C-ELV-CS-2285: Expenses: 1 223315

| ID | WBS | Activity | Duration | Start | Finish | Predecessors | Total float | Free float | Cost | AREA |
| --- | --- | --- | --- | --- | --- | --- | --- | --- | --- | --- |
|  | 4 | **IP, SMATV & QAM Television System** |  | 2016-04-11 | 2016-08-18 |  |  |  |  |  |
| C-ELV-SMATV-2255 |  | Installation of SMATV first Fix Conduits, Boxes within block work , Gypsum Boards & Raised FLooring at level 45 | 20d | 2016-04-11 | 2016-05-03 | C-F-P-1363, C-F-P-1353, SD-CS-L45-1392, C-ELV-SMATV-2305 SS | 55d | 0d | 4,452.18 | GEN |
| C-ELV-SMATV-2295 |  | Installation of Cable Trays & Truncking at level 45 | 25d | 2016-05-12 | 2016-06-09 | C-ELV-CCTV-2295 SS+5d | 22d | 0d | 2,769.38 |  |
| C-ELV-SMATV-2265 |  | Installation of second fix (Cabling & Wirring etc..) at level 45 | 16d | 2016-06-11 | 2016-06-28 | C-ELV-SMATV-2255, C-ELV-SMATV-2295 | 24d | 0d | 10,388.41 | GEN |
| C-ELV-SMATV-2275 |  | Installation & Connection of Outlets, switches and splitter at level 45 | 18d | 2016-06-29 | 2016-07-23 | C-ELV-SMATV-2265 | 24d | 2d | 6,537.45 | GEN |
| C-ELV-SMATV-2285 |  | Installtion & Connection of SMATV & QAM fiber & receiver at level 45 | 20d | 2016-07-27 | 2016-08-18 | C-ELV-SMATV-2275, C-ELV-SMATV-2335 SS | 142d | 0d | 2,419.21 |  |
|  | 5 | **BMS system** |  | 2016-04-16 | 2016-08-25 |  |  |  |  |  |
| C-MEP-BMS-2255 |  | Installation of BMS first Fix Conduits, Boxes within block work , Gypsum Boards & Raised FLooring at level 45 | 20d | 2016-04-16 | 2016-05-08 | C-F-P-1363, C-F-P-1353, SD-CS-L45-1272, C-MEP-BMS-2305 | 50d | 0d | 8,895.95 | GEN |
| C-MEP-BMS-2295 |  | Installation of Cable trays & Trunking at level 45 | 20d | 2016-05-18 | 2016-06-09 | C-ELV-SMATV-2295 SS+5d | 22d | 0d |  |  |
| C-MEP-BMS-2265 |  | Installation of BMS Cabling & Wirring at level 45 | 16d | 2016-06-11 | 2016-06-28 | C-MEP-BMS-2255, C-MEP-BMS-2295 | 22d | 0d | 11,861.27 | GEN |
| C-MEP-BMS-2275 |  | Installation & Connection of BMS Sensors, Relays, & Valves at level 45 | 20d | 2016-06-29 | 2016-07-25 | C-MEP-BMS-2265, C-MEP-PD-2285, C-MEP-PD-2275, C-MEP-FF-1814, C-MEP-AC-3668, C-MEP-AC-3648, C-MEP-AC-3658 | 22d | 0d | 14,826.58 | GEN |
| C-MEP-BMS-2285 |  | Installtion & Connection of BMS Racks, Panels etc... at level 45 | 20d | 2016-08-03 | 2016-08-25 | C-MEP-BMS-2275, C-MEP-BMS-2335 | 146d | 0d | 14,826.58 |  |
|  | 33 | **MEP - Level 46** |  | 2016-03-10 | 2017-01-08 |  |  |  |  |  |
|  | 1 | **Electrical** |  | 2016-03-27 | 2017-01-08 |  |  |  |  |  |
| C-MEP-E-2886 |  | Installation of first Electrical Fix Conduits, Boxes within block work & Gypsum Boards at level 46 | 20d | 2016-03-27 | 2016-04-18 | C-F-P-1443, C-MEP-E-2406 | 85d | 17d | 55,235.7 | GEN |
| C-MEP-E-2936 |  | Installation of Cable Trays & Truncking at level 46 | 25d | 2016-04-14 | 2016-05-12 | C-MEP-FF-1924 SS+10d, C-MEP-PD-2405 SS+5d, C-MEP-E-2456 | 21d | 0d | 21,017.55 |  |
| C-MEP-E-2896 |  | Installation of Electrical Second Fix (Cabling & Wirring etc..). at level 46 | 18d | 2016-05-14 | 2016-06-02 | C-MEP-E-2886, C-MEP-E-2936, C-MEP-E-2416 | 64d | 0d | 190,528.33 | GEN |
| C-MEP-E-2906 |  | Installation & Connection of Electrical DB's, SMDB's at level 46 | 16d | 2016-06-04 | 2016-06-21 | C-MEP-E-2896, C-MEP-E-2666 | 166d | 7d | 78,921.15 | GEN |
| C-MEP-E-2926 |  | Installation & Connection of Lighting Fixtures & Sockets at level 46 | 14d | 2016-12-24 | 2017-01-08 | C-MEP-E-2896, C-F-CF-3397, C-F-CF-3387, C-F-WF-1934, C-F-WF-1944, C-MEP-E-2386, C-F-P-LSF-752 FF | 84d | 66d | 71,857.69 | GEN |
|  | 2 | **HVAC** |  | 2016-03-10 | 2016-12-22 |  |  |  |  |  |
| C-MEP-AC-3848 |  | Installation of Ductwork, Insulation & Dampers at level 46 | 23d | 2016-03-10 | 2016-04-05 | C-F-P-1443 SS, C-MEP-AC-3128, SD-CS-L46-1092 | 31d | 0d | 140,612.08 | GEN |
| C-MEP-AC-3868 |  | Installation of Chilled Water Pipes & Valves at level 46 | 25d | 2016-03-22 | 2016-04-19 | C-MEP-AC-3848 SS+10d, C-MEP-AC-3068 | 70d | 0d | 30,741.92 | GEN |
| C-MEP-AC-3908 |  | Installation of HVAC equipments AHU's, FCU's, ERU's, VAV's, CAV's & Fans at level 46 | 25d | 2016-04-05 | 2016-05-03 | C-MEP-AC-3898 FF, C-MEP-AC-3888 FF, C-MEP-AC-3848 SS | 70d | 49d | 55,464.21 | GEN |
| C-MEP-AC-3888 |  | Pressure testing & Insulation of Chilled Water Pipes at level 46 | 12d | 2016-04-20 | 2016-05-03 | C-MEP-AC-3868 | 70d | 0d | 8,821.1 | GEN |
| C-MEP-AC-3898 |  | Pressure testing of Ductwork at level 46 | 8d | 2016-04-23 | 2016-05-01 | C-MEP-AC-3848, C-MEP-AC-3658 | 62d | 0d |  | GEN |
| C-MEP-AC-3858 |  | Installation of Silencers, Attenuators, Isolators & Detectors at level 46 | 12d | 2016-05-02 | 2016-05-15 | C-MEP-AC-3898 | 80d | 59d | 28,274.51 | GEN |
| C-MEP-AC-3878 |  | Installation of Chilled Water Pipes Control Devices & Isolator at level 46 | 8d | 2016-05-04 | 2016-05-12 | C-MEP-AC-3888 | 82d | 61d | 2,889.38 | GEN |
| C-MEP-AC-3918 |  | Installation of Grilles, Diffusers & Controller at level 46 | 12d | 2016-12-08 | 2016-12-22 | C-MEP-AC-3908, C-F-CF-3397, C-F-CF-3387, C-F-WF-1944 FF, C-F-CF-3387 FF, C-F-WF-1934 FF, C-MEP-AC-3198 | 70d | 55d | 55,880.87 | GEN |

Notes:
- C-ELV-SMATV-2255: Expenses: 1 4452.18
- C-ELV-SMATV-2295: Expenses: 1 2769.38
- C-ELV-SMATV-2265: Expenses: 1 10388.4
- C-ELV-SMATV-2275: Expenses: 1 6537.45
- C-ELV-SMATV-2285: Expenses: 1 2419.21
- C-MEP-BMS-2255: Expenses: 1 8895.95
- C-MEP-BMS-2265: Expenses: 1 11861.3
- C-MEP-BMS-2275: Expenses: 1 14826.6
- C-MEP-BMS-2285: Expenses: 1 14826.6
- C-MEP-E-2886: Expenses: 1 55235.7
- C-MEP-E-2936: Expenses: 1 21017.5
- C-MEP-E-2896: Expenses: 1 57962.7; 2 132566
- C-MEP-E-2906: Expenses: 1 78921.1
- C-MEP-E-2926: Expenses: 1 71857.7
- C-MEP-AC-3848: Expenses: 1 140612
- C-MEP-AC-3868: Expenses: 1 30741.9
- C-MEP-AC-3908: Expenses: 1 55464.2
- C-MEP-AC-3888: Expenses: 1 8821.1
- C-MEP-AC-3858: Expenses: 1 28274.5
- C-MEP-AC-3878: Expenses: 1 2889.38
- C-MEP-AC-3918: Expenses: 1 55880.9

| ID | WBS | Activity | Duration | Start | Finish | Predecessors | Total float | Free float | Cost | AREA |
| --- | --- | --- | --- | --- | --- | --- | --- | --- | --- | --- |
|  | 3 | **Fire Fighting** |  | 2016-03-22 | 2016-09-13 |  |  |  |  |  |
| C-MEP-FF-1924 |  | Installation of FIre fighting Pipes at level 46 | 25d | 2016-03-22 | 2016-04-19 | C-MEP-AC-3848 SS+10d, SD-CS-L46-1112 | 31d | 0d | 45,406.88 | GEN |
| C-MEP-FF-1944 |  | Pressure testing of fire fighting pipes at level 46 | 8d | 2016-04-20 | 2016-04-28 | C-MEP-FF-1924 | 54d | 0d | 5,280.67 | GEN |
| C-MEP-FF-1934 |  | Installation of fire Fighting Valves at level 46 | 20d | 2016-04-30 | 2016-05-22 | C-MEP-FF-1944 | 54d | 33d | 18,427.34 | GEN |
| C-MEP-FF-1954 |  | Installation of Fire Fighting Sprinklers & Fire hose Cabinets & Extinguishers at level 46 | 14d | 2016-08-25 | 2016-09-13 | C-MEP-FF-1934, C-F-CF-3387, C-F-CF-3377, C-MEP-FF-1944 | 80d | 0d | 64,097.37 | GEN |
|  | 4 | **Plumbing & Drainage** |  | 2016-04-09 | 2016-12-27 |  |  |  |  |  |
| C-MEP-PD-2405 |  | Installation of Water Pipes & Valves (Hot & Cold atc..) at level 46 | 20d | 2016-04-09 | 2016-05-01 | C-MEP-FF-1924 SS, C-F-P-1453, SD-CS-L46-1152 | 21d | 0d | 83,874.06 | GEN |
| C-MEP-PD-2415 |  | Installation drainage Pipes at level 46 | 25d | 2016-04-09 | 2016-05-07 | C-MEP-PD-2405 SS | 59d | 0d | 30,204.4 | GEN |
| C-MEP-PD-2425 |  | Pressure testing & Insullation of water pipes at level 46 | 8d | 2016-05-02 | 2016-05-10 | C-MEP-PD-2405 | 64d | 43d | 9,573.63 | GEN |
| C-MEP-PD-2435 |  | Pressure testing of drainage pipes at level 46 | 8d | 2016-05-08 | 2016-05-16 | C-MEP-PD-2415 | 59d | 38d | 1,651.42 | GEN |
| C-MEP-PD-2445 |  | Installation of Outlets, Drains, Gullies, Cowls, & Clean out at level 46 | 20d | 2016-12-04 | 2016-12-27 | C-MEP-PD-2425, C-MEP-PD-2425 FF, C-F-FF-1934, C-F-WF-1934, C-F-FF-1934 FF, C-F-WF-1954, C-F-WF-1934 FF, C-F-DW-1934, C-MEP-PD-1795, C-F-P-LSF-752 FF | 96d | 81d | 13,120.28 | GEN |
|  | 7 | **ELV systems** |  | 2016-04-09 | 2016-09-04 |  |  |  |  |  |
|  | 1 | **Room Management System** |  | 2016-04-09 | 2016-08-11 |  |  |  |  |  |
| C-ELV-RMS-2405 |  | Installation of RMS first fix (Conduits, Boxes within block work , Gypsum Boards & Raised FLooring at level 46 | 20d | 2016-04-09 | 2016-05-01 | C-F-P-1453, C-F-P-1443, SD-CS-L46-1332, C-ELV-RMS-2255 SS | 41d | 4d | 11,902.78 | GEN |
| C-ELV-RMS-2445 |  | Installation of Cable Trays & Truncking at level 46 | 25d | 2016-04-20 | 2016-05-18 | C-ELV-CS-2445 SS+5d | 21d | 0d | 2,769.38 |  |
| C-ELV-RMS-2415 |  | Installation of second fix (Cabling & Wirring etc..) at level 46 | 25d | 2016-05-19 | 2016-06-16 | C-ELV-RMS-2405, C-ELV-RMS-2445 | 27d | 0d | 11,902.78 | GEN |
| C-ELV-RMS-2425 |  | Installation & Connection of ethernets & HVAC thermostates etc.. at level 46 | 25d | 2016-06-18 | 2016-07-19 | C-ELV-RMS-2415 | 27d | 0d | 27,773.16 | GEN |
| C-ELV-RMS-2435 |  | Installtion & Connection of Panels, Controller, switches, server etc..) at level 46 | 20d | 2016-07-20 | 2016-08-11 | C-ELV-RMS-2425, C-ELV-RMS-2285 SS | 128d | 0d | 27,773.16 |  |
|  | 12 | **Fire Alarm & Detection System** |  | 2016-04-11 | 2016-08-20 |  |  |  |  |  |
| C-ELV-FA-2405 |  | Installation of FA first Fix Conduits, Boxes within block work , Gypsum Boards & Raised FLooring at level 46 | 20d | 2016-04-11 | 2016-05-03 | C-F-P-1453, C-F-P-1443, C-ELV-FA-2255 SS | 44d | 2d | 13,660.92 | GEN |
| C-ELV-FA-2445 |  | Installation of Cable Trays & Truncking at level 46 | 25d | 2016-05-02 | 2016-05-30 | C-ELV-MSPA-2445 SS+5d, SD-CS-L46-1372 | 21d | 0d | 2,769.38 |  |
| C-ELV-FA-2415 |  | Installation of second fix (Cabling & Wirring etc..) at level 46 | 20d | 2016-05-31 | 2016-06-22 | C-ELV-FA-2405, C-ELV-FA-2445 | 22d | 0d | 22,768.2 | GEN |
| C-ELV-FA-2425 |  | Installation & Connection of heat detector, smoke detector, flame detector etc.. at level 46 | 25d | 2016-06-23 | 2016-07-25 | C-ELV-FA-2415 | 22d | 1d | 27,321.84 | GEN |
| C-ELV-FA-2435 |  | Installtion & Connection of Racks & Panels at level 46 | 20d | 2016-07-28 | 2016-08-20 | C-ELV-FA-2425, C-ELV-FA-2285 SS | 141d | 2d | 27,321.84 |  |

Notes:
- C-MEP-FF-1924: Expenses: 1 45406.9
- C-MEP-FF-1944: Expenses: 1 5280.67
- C-MEP-FF-1934: Expenses: 1 18427.3
- C-MEP-FF-1954: Expenses: 1 64097.4
- C-MEP-PD-2405: Expenses: 1 83874.1
- C-MEP-PD-2415: Expenses: 1 30204.4
- C-MEP-PD-2425: Expenses: 1 9573.63
- C-MEP-PD-2435: Expenses: 1 1651.42
- C-MEP-PD-2445: Expenses: 1 13120.3
- C-ELV-RMS-2405: Expenses: 1 11902.8
- C-ELV-RMS-2445: Expenses: 1 2769.38
- C-ELV-RMS-2415: Expenses: 1 11902.8
- C-ELV-RMS-2425: Expenses: 1 27773.2
- C-ELV-RMS-2435: Expenses: 1 27773.2
- C-ELV-FA-2405: Expenses: 1 13660.9
- C-ELV-FA-2445: Expenses: 1 2769.38
- C-ELV-FA-2415: Expenses: 1 22768.2
- C-ELV-FA-2425: Expenses: 1 27321.8
- C-ELV-FA-2435: Expenses: 1 27321.8

| ID | WBS | Activity | Duration | Start | Finish | Predecessors | Total float | Free float | Cost | AREA |
| --- | --- | --- | --- | --- | --- | --- | --- | --- | --- | --- |
|  | 2 | **Music System & Public Address System** |  | 2016-04-11 | 2016-08-20 |  |  |  |  |  |
| C-ELV-MSPA-2405 |  | Installation of MS/PA first fix (Conduits, Boxes within block work, Gypsum Boards & Raised FLooring at level 46 | 20d | 2016-04-11 | 2016-05-03 | C-F-P-1453, C-F-P-1443, SD-CS-L46-1352, C-ELV-MSPA-2255 SS | 40d | 2d | 6,994.34 | GEN |
| C-ELV-MSPA-2445 |  | Installation of Cable Trays & Truncking at level 46 | 25d | 2016-04-26 | 2016-05-24 | C-ELV-RMS-2445 SS+5d | 21d | 0d | 2,769.38 |  |
| C-ELV-MSPA-2415 |  | Installation of second fix (Cabling & Wirring etc..) at level 46 | 25d | 2016-05-25 | 2016-06-22 | C-ELV-MSPA-2405, C-ELV-MSPA-2445 | 22d | 0d | 6,994.34 | GEN |
| C-ELV-MSPA-2425 |  | Installation & Connection of speakers, Amplifier & Controller at level 46 | 25d | 2016-06-23 | 2016-07-25 | C-ELV-MSPA-2415 | 22d | 1d | 16,320.12 | GEN |
| C-ELV-MSPA-2435 |  | Installtion & Connection of Media hub, panels and processor at level 46 | 20d | 2016-07-28 | 2016-08-20 | C-ELV-MSPA-2425, C-ELV-MSPA-2285 SS | 141d | 2d | 16,320.12 |  |
|  | 3 | **IP CCTV & Access Control System** |  | 2016-04-11 | 2016-09-04 |  |  |  |  |  |
| C-ELV-CCTV-2405 |  | Installation of CCTV first Fix Conduits, Boxes within block work, Gypsum Boards & Raised FLooring at level 46 | 20d | 2016-04-11 | 2016-05-03 | C-F-P-1453, C-F-P-1443, SD-CS-L46-1392, C-ELV-CCTV-2255 SS | 51d | 2d | 8,161.35 | GEN |
| C-ELV-CCTV-2445 |  | Installation of Cable Trays & Truncking at level 46 | 25d | 2016-05-08 | 2016-06-05 | C-ELV-FA-2445 SS+5d | 21d | 0d | 2,769.38 |  |
| C-ELV-CCTV-2415 |  | Installation of second fix (Cabling & Wirring etc..) at level 46 | 20d | 2016-06-06 | 2016-06-28 | C-ELV-CCTV-2405, C-ELV-CCTV-2445 | 24d | 0d | 19,043.14 | GEN |
| C-ELV-CCTV-2425 |  | Installation & Connection of Camera's & Alarms at level 46 | 18d | 2016-06-29 | 2016-07-23 | C-ELV-CCTV-2415 | 24d | 3d | 183,698.91 | GEN |
| C-ELV-CCTV-2435 |  | Installtion & Connection of Racks, Panels etc... at level 46 | 25d | 2016-08-07 | 2016-09-04 | C-ELV-CCTV-2425 FF, C-ELV-CCTV-2285 SS | 123d | 0d | 7,322.52 |  |
|  | 7 | **Communication System** |  | 2016-04-11 | 2016-08-29 |  |  |  |  |  |
| C-ELV-CS-2405 |  | Installation of CS first fix (Conduits, Boxes within block work, Gypsum Boards & Raised FLooring at level 46 | 20d | 2016-04-11 | 2016-05-03 | C-F-P-1453, C-F-P-1443, SD-CS-L46-1312, C-ELV-CS-2255 SS | 54d | 4d | 27,356.12 | GEN |
| C-ELV-CS-2445 |  | Installation of Cable Trays & Truncking at level 46 | 25d | 2016-04-14 | 2016-05-12 | C-MEP-E-2936 SS | 21d | 0d | 2,769.38 |  |
| C-ELV-CS-2415 |  | Installation of second fix (Cabling & Wirring etc..) at level 46 | 25d | 2016-05-14 | 2016-06-11 | C-ELV-CS-2405, C-ELV-CS-2445 | 49d | 0d | 82,068.35 | GEN |
| C-ELV-CS-2425 |  | Installation & Connection of Wireless Access points & IP dect phone & RJ 45 at level 46 | 8d | 2016-06-12 | 2016-06-20 | C-ELV-CS-2415 | 49d | 28d | 93,342.54 | GEN |
| C-ELV-CS-2435 |  | Installtion & Connection of Controller & Instrumentation at level 46 | 20d | 2016-08-07 | 2016-08-29 | C-ELV-CS-2425, C-ELV-CS-2285 SS | 153d | 0d | 223,314.69 |  |
|  | 4 | **IP, SMATV & QAM Television System** |  | 2016-04-11 | 2016-08-18 |  |  |  |  |  |
| C-ELV-SMATV-2405 |  | Installation of SMATV first Fix Conduits, Boxes within block work , Gypsum Boards & Raised FLooring at level 46 | 20d | 2016-04-11 | 2016-05-03 | C-F-P-1453, C-F-P-1443, SD-CS-L46-1412, C-ELV-SMATV-2255 SS | 55d | 2d | 4,452.18 | GEN |
| C-ELV-SMATV-2445 |  | Installation of Cable Trays & Truncking at level 46 | 25d | 2016-05-14 | 2016-06-11 | C-ELV-CCTV-2445 SS+5d | 21d | 0d | 2,769.38 |  |
| C-ELV-SMATV-2415 |  | Installation of second fix (Cabling & Wirring etc..) at level 46 | 16d | 2016-06-12 | 2016-06-29 | C-ELV-SMATV-2405, C-ELV-SMATV-2445 | 23d | 0d | 10,388.41 | GEN |
| C-ELV-SMATV-2425 |  | Installation & Connection of Outlets, switches and splitter at level 46 | 18d | 2016-06-30 | 2016-07-24 | C-ELV-SMATV-2415 | 23d | 2d | 6,537.45 | GEN |
| C-ELV-SMATV-2435 |  | Installtion & Connection of SMATV & QAM fiber & receiver at level 46 | 20d | 2016-07-27 | 2016-08-18 | C-ELV-SMATV-2425, C-ELV-SMATV-2285 SS | 142d | 2d | 2,419.21 |  |

Notes:
- C-ELV-MSPA-2405: Expenses: 1 6994.34
- C-ELV-MSPA-2445: Expenses: 1 2769.38
- C-ELV-MSPA-2415: Expenses: 1 6994.34
- C-ELV-MSPA-2425: Expenses: 1 16320.1
- C-ELV-MSPA-2435: Expenses: 1 16320.1
- C-ELV-CCTV-2405: Expenses: 1 8161.35
- C-ELV-CCTV-2445: Expenses: 1 2769.38
- C-ELV-CCTV-2415: Expenses: 1 19043.1
- C-ELV-CCTV-2425: Expenses: 1 183699
- C-ELV-CCTV-2435: Expenses: 1 7322.52
- C-ELV-CS-2405: Expenses: 1 27356.1
- C-ELV-CS-2445: Expenses: 1 2769.38
- C-ELV-CS-2415: Expenses: 1 82068.4
- C-ELV-CS-2425: Expenses: 1 93342.5
- C-ELV-CS-2435: Expenses: 1 223315
- C-ELV-SMATV-2405: Expenses: 1 4452.18
- C-ELV-SMATV-2445: Expenses: 1 2769.38
- C-ELV-SMATV-2415: Expenses: 1 10388.4
- C-ELV-SMATV-2425: Expenses: 1 6537.45
- C-ELV-SMATV-2435: Expenses: 1 2419.21

| ID | WBS | Activity | Duration | Start | Finish | Predecessors | Total float | Free float | Cost | AREA |
| --- | --- | --- | --- | --- | --- | --- | --- | --- | --- | --- |
|  | 5 | **BMS system** |  | 2016-04-16 | 2016-08-25 |  |  |  |  |  |
| C-MEP-BMS-2405 |  | Installation of BMS first Fix Conduits, Boxes within block work , Gypsum Boards & Raised FLooring at level 46 | 20d | 2016-04-16 | 2016-05-08 | C-F-P-1453, C-F-P-1443, SD-CS-L46-1292, C-MEP-BMS-2255 SS | 50d | 0d | 8,895.95 | GEN |
| C-MEP-BMS-2445 |  | Installation of Cable trays & Trunking at level 46 | 20d | 2016-05-19 | 2016-06-11 | C-ELV-SMATV-2445 SS+5d | 21d | 0d |  |  |
| C-MEP-BMS-2415 |  | Installation of BMS Cabling & Wirring at level 46 | 16d | 2016-06-12 | 2016-06-29 | C-MEP-BMS-2405, C-MEP-BMS-2445 | 21d | 0d | 11,861.27 | GEN |
| C-MEP-BMS-2425 |  | Installation & Connection of BMS Sensors, Relays, & Valves at level 46 | 20d | 2016-06-30 | 2016-07-26 | C-MEP-BMS-2415, C-MEP-PD-2435, C-MEP-PD-2425, C-MEP-FF-1934, C-MEP-AC-3908, C-MEP-AC-3888, C-MEP-AC-3898 | 21d | 0d | 14,826.58 | GEN |
| C-MEP-BMS-2435 |  | Installtion & Connection of BMS Racks, Panels etc... at level 46 | 20d | 2016-08-03 | 2016-08-25 | C-MEP-BMS-2425, C-MEP-BMS-2285 SS | 146d | 0d | 14,826.58 |  |
|  | 32 | **MEP - Level 47** |  | 2016-03-15 | 2017-01-17 |  |  |  |  |  |
|  | 1 | **Electrical** |  | 2016-03-31 | 2017-01-17 |  |  |  |  |  |
| C-MEP-E-2586 |  | Installation of first Electrical Fix Conduits, Boxes within block work & Gypsum Boards at level 47 | 20d | 2016-03-31 | 2016-04-23 | C-F-P-1293, C-MEP-E-2106 | 26d | 13d | 55,235.7 | GEN |
| C-MEP-E-2636 |  | Installation of Cable Trays & Truncking at level 47 | 18d | 2016-04-19 | 2016-05-09 | C-MEP-FF-1724 SS+10d, C-MEP-PD-2155 SS+5d, C-MEP-E-2156 | 12d | 0d | 21,017.55 |  |
| C-MEP-E-2596 |  | Installation of Electrical Second Fix (Cabling & Wirring etc..). at level 47 | 18d | 2016-05-10 | 2016-05-30 | C-MEP-E-2586, C-MEP-E-2636, C-MEP-E-2116 | 12d | 0d | 190,528.33 | GEN |
| C-MEP-E-2606 |  | Installation & Connection of Electrical DB's, SMDB's at level 47 | 16d | 2016-05-31 | 2016-06-18 | C-MEP-E-2596, C-MEP-E-3026 SS | 12d | 0d | 78,921.15 | GEN |
| C-MEP-E-2626 |  | Installation & Connection of Lighting Fixtures & Sockets at level 47 | 14d | 2017-01-02 | 2017-01-17 | C-MEP-E-2596, C-F-CF-3047, C-F-CF-3037, C-F-WF-1734, C-F-WF-1744, C-MEP-E-2506 | 86d | 68d | 71,857.69 | GEN |
|  | 2 | **HVAC** |  | 2016-03-15 | 2016-12-27 |  |  |  |  |  |
| C-MEP-AC-3448 |  | Installation of Ductwork, Insulation & Dampers at level 47 | 23d | 2016-03-15 | 2016-04-10 | C-F-P-1293 SS, C-MEP-AC-3288, SD-CS-L47-1112 | 22d | 0d | 140,612.08 | GEN |
| C-MEP-AC-3468 |  | Installation of Chilled Water Pipes & Valves at level 47 | 25d | 2016-03-27 | 2016-04-24 | C-MEP-AC-3448 SS+10d, C-MEP-AC-3228 | 66d | 0d | 30,741.92 | GEN |
| C-MEP-AC-3508 |  | Installation of HVAC equipments AHU's, FCU's, ERU's, VAV's, CAV's & Fans at level 47 | 25d | 2016-04-12 | 2016-05-10 | C-MEP-AC-3498 FF, C-MEP-AC-3488 FF, C-MEP-AC-3448 SS | 64d | 47d | 122,974.88 | GEN |
| C-MEP-AC-3488 |  | Pressure testing & Insulation of Chilled Water Pipes at level 47 | 12d | 2016-04-25 | 2016-05-08 | C-MEP-AC-3468 | 66d | 0d | 8,821.1 | GEN |
| C-MEP-AC-3498 |  | Pressure testing of Ductwork at level 47 | 8d | 2016-05-02 | 2016-05-10 | C-MEP-AC-3448, C-MEP-AC-3898 | 62d | 0d |  | GEN |
| C-MEP-AC-3478 |  | Installation of Chilled Water Pipes Control Devices & Isolator at level 47 | 8d | 2016-05-09 | 2016-05-17 | C-MEP-AC-3488 | 78d | 61d | 2,889.38 | GEN |
| C-MEP-AC-3458 |  | Installation of Silencers, Attenuators, Isolators & Detectors at level 47 | 12d | 2016-05-11 | 2016-05-24 | C-MEP-AC-3498 | 72d | 55d | 28,274.51 | GEN |
| C-MEP-AC-3518 |  | Installation of Grilles, Diffusers & Controller at level 47 | 12d | 2016-12-13 | 2016-12-27 | C-MEP-AC-3508, C-F-CF-3047, C-F-CF-3037, C-F-WF-1744 FF, C-F-CF-3037 FF, C-F-WF-1734 FF, C-MEP-AC-3358 | 66d | 51d | 55,880.87 | GEN |
|  | 3 | **Fire Fighting** |  | 2016-03-27 | 2016-09-18 |  |  |  |  |  |
| C-MEP-FF-1724 |  | Installation of FIre fighting Pipes at level 47 | 25d | 2016-03-27 | 2016-04-24 | C-MEP-AC-3448 SS+10d, SD-CS-L47-1132 | 22d | 0d | 45,406.88 | GEN |
| C-MEP-FF-1744 |  | Pressure testing of fire fighting pipes at level 47 | 8d | 2016-04-25 | 2016-05-03 | C-MEP-FF-1724 | 50d | 0d | 5,280.67 | GEN |
| C-MEP-FF-1734 |  | Installation of fire Fighting Valves at level 47 | 20d | 2016-05-04 | 2016-05-26 | C-MEP-FF-1744 | 50d | 33d | 18,427.34 | GEN |
| C-MEP-FF-1754 |  | Installation of Fire Fighting Sprinklers & Fire hose Cabinets & Extinguishers at level 47 | 14d | 2016-08-30 | 2016-09-18 | C-MEP-FF-1734, C-F-CF-3037, C-F-CF-3027, C-MEP-FF-1744 | 76d | 0d | 64,097.37 | GEN |

Notes:
- C-MEP-BMS-2405: Expenses: 1 8895.95
- C-MEP-BMS-2415: Expenses: 1 11861.3
- C-MEP-BMS-2425: Expenses: 1 14826.6
- C-MEP-BMS-2435: Expenses: 1 14826.6
- C-MEP-E-2586: Expenses: 1 55235.7
- C-MEP-E-2636: Expenses: 1 21017.5
- C-MEP-E-2596: Expenses: 1 57962.7; 2 132566
- C-MEP-E-2606: Expenses: 1 78921.1
- C-MEP-E-2626: Expenses: 1 71857.7
- C-MEP-AC-3448: Expenses: 1 140612
- C-MEP-AC-3468: Expenses: 1 30741.9
- C-MEP-AC-3508: Expenses: 1 122975
- C-MEP-AC-3488: Expenses: 1 8821.1
- C-MEP-AC-3478: Expenses: 1 2889.38
- C-MEP-AC-3458: Expenses: 1 28274.5
- C-MEP-AC-3518: Expenses: 1 55880.9
- C-MEP-FF-1724: Expenses: 1 45406.9
- C-MEP-FF-1744: Expenses: 1 5280.67
- C-MEP-FF-1734: Expenses: 1 18427.3
- C-MEP-FF-1754: Expenses: 1 64097.4

| ID | WBS | Activity | Duration | Start | Finish | Predecessors | Total float | Free float | Cost | AREA |
| --- | --- | --- | --- | --- | --- | --- | --- | --- | --- | --- |
|  | 4 | **Plumbing & Drainage** |  | 2016-04-13 | 2016-12-21 |  |  |  |  |  |
| C-MEP-PD-2155 |  | Installation of Water Pipes & Valves (Hot & Cold atc..) at level 47 | 20d | 2016-04-13 | 2016-05-05 | C-MEP-FF-1724 SS, C-F-P-1303, SD-CS-L47-1172 | 12d | 0d | 83,874.06 | GEN |
| C-MEP-PD-2165 |  | Installation drainage Pipes at level 47 | 25d | 2016-04-13 | 2016-05-11 | C-MEP-PD-2155 SS | 55d | 0d | 30,204.4 | GEN |
| C-MEP-PD-2175 |  | Pressure testing & Insullation of water pipes at level 47 | 8d | 2016-05-07 | 2016-05-15 | C-MEP-PD-2155 | 60d | 43d | 9,573.63 | GEN |
| C-MEP-PD-2185 |  | Pressure testing of drainage pipes at level 47 | 8d | 2016-05-12 | 2016-05-21 | C-MEP-PD-2165 | 55d | 38d | 1,651.42 | GEN |
| C-MEP-PD-2195 |  | Installation of Outlets, Drains, Gullies, Cowls, & Clean out at level 47 | 20d | 2016-11-28 | 2016-12-21 | C-MEP-PD-2175, C-MEP-PD-2175 FF, C-F-FF-1734, C-F-WF-1734, C-F-FF-1734 FF, C-F-WF-1754, C-F-WF-1734 FF, C-F-DW-1734, C-MEP-PD-1995 | 111d | 96d | 13,120.28 | GEN |
|  | 7 | **ELV systems** |  | 2016-04-13 | 2016-09-04 |  |  |  |  |  |
|  | 1 | **Room Management System** |  | 2016-04-13 | 2016-09-04 |  |  |  |  |  |
| C-ELV-RMS-2155 |  | Installation of RMS first fix (Conduits, Boxes within block work , Gypsum Boards & Raised FLooring at level 47 | 20d | 2016-04-13 | 2016-05-05 | C-F-P-1303, C-F-P-1293, SD-CS-L47-1352, C-ELV-RMS-2405 SS | 37d | 1d | 11,902.78 | GEN |
| C-ELV-RMS-2195 |  | Installation of Cable Trays & Truncking at level 47 | 25d | 2016-04-25 | 2016-05-23 | C-ELV-CS-2195 SS+5d | 17d | 0d | 2,769.38 |  |
| C-ELV-RMS-2165 |  | Installation of second fix (Cabling & Wirring etc..) at level 47 | 25d | 2016-05-24 | 2016-06-21 | C-ELV-RMS-2155, C-ELV-RMS-2195 | 23d | 0d | 11,902.78 | GEN |
| C-ELV-RMS-2175 |  | Installation & Connection of ethernets & HVAC thermostates etc.. at level 47 | 25d | 2016-06-22 | 2016-07-24 | C-ELV-RMS-2165 | 23d | 6d | 27,773.16 | GEN |
| C-ELV-RMS-2185 |  | Installtion & Connection of Panels, Controller, switches, server etc..) at level 47 | 20d | 2016-08-13 | 2016-09-04 | C-ELV-RMS-2175 SS, C-ELV-RMS-2435 | 128d | 0d | 27,773.16 |  |
|  | 12 | **Fire Alarm & Detection System** |  | 2016-04-13 | 2016-08-22 |  |  |  |  |  |
| C-ELV-FA-2155 |  | Installation of FA first Fix Conduits, Boxes within block work , Gypsum Boards & Raised FLooring at level 47 | 20d | 2016-04-13 | 2016-05-05 | C-F-P-1303, C-F-P-1293, C-ELV-FA-2405 SS | 42d | 1d | 13,660.92 | GEN |
| C-ELV-FA-2195 |  | Installation of Cable Trays & Truncking at level 47 | 25d | 2016-05-07 | 2016-06-04 | C-ELV-MSPA-2195 SS+5d, SD-CS-L47-1392 | 17d | 0d | 2,769.38 |  |
| C-ELV-FA-2165 |  | Installation of second fix (Cabling & Wirring etc..) at level 47 | 20d | 2016-06-05 | 2016-06-27 | C-ELV-FA-2155, C-ELV-FA-2195 | 18d | 0d | 22,768.2 | GEN |
| C-ELV-FA-2175 |  | Installation & Connection of heat detector, smoke detector, flame detector etc.. at level 47 | 25d | 2016-06-28 | 2016-07-30 | C-ELV-FA-2165 | 18d | 0d | 27,321.84 | GEN |
| C-ELV-FA-2185 |  | Installtion & Connection of Racks & Panels at level 47 | 20d | 2016-07-31 | 2016-08-22 | C-ELV-FA-2175, C-ELV-FA-2435 SS | 139d | 1d | 27,321.84 |  |
|  | 2 | **Music System & Public Address System** |  | 2016-04-13 | 2016-08-22 |  |  |  |  |  |
| C-ELV-MSPA-2155 |  | Installation of MS/PA first fix (Conduits, Boxes within block work, Gypsum Boards & Raised FLooring at level 47 | 20d | 2016-04-13 | 2016-05-05 | C-F-P-1303, C-F-P-1293, SD-CS-L47-1372, C-ELV-MSPA-2405 SS | 38d | 1d | 6,994.34 | GEN |
| C-ELV-MSPA-2195 |  | Installation of Cable Trays & Truncking at level 47 | 25d | 2016-05-01 | 2016-05-29 | C-ELV-RMS-2195 SS+5d | 17d | 0d | 2,769.38 |  |
| C-ELV-MSPA-2165 |  | Installation of second fix (Cabling & Wirring etc..) at level 47 | 25d | 2016-05-30 | 2016-06-27 | C-ELV-MSPA-2155, C-ELV-MSPA-2195 | 18d | 0d | 6,994.34 | GEN |
| C-ELV-MSPA-2175 |  | Installation & Connection of speakers, Amplifier & Controller at level 47 | 25d | 2016-06-28 | 2016-07-30 | C-ELV-MSPA-2165 | 18d | 0d | 16,320.12 | GEN |
| C-ELV-MSPA-2185 |  | Installtion & Connection of Media hub, panels and processor at level 47 | 20d | 2016-07-31 | 2016-08-22 | C-ELV-MSPA-2175, C-ELV-MSPA-2435 SS | 139d | 1d | 16,320.12 |  |

Notes:
- C-MEP-PD-2155: Expenses: 1 83874.1
- C-MEP-PD-2165: Expenses: 1 30204.4
- C-MEP-PD-2175: Expenses: 1 9573.63
- C-MEP-PD-2185: Expenses: 1 1651.42
- C-MEP-PD-2195: Expenses: 1 13120.3
- C-ELV-RMS-2155: Expenses: 1 11902.8
- C-ELV-RMS-2195: Expenses: 1 2769.38
- C-ELV-RMS-2165: Expenses: 1 11902.8
- C-ELV-RMS-2175: Expenses: 1 27773.2
- C-ELV-RMS-2185: Expenses: 1 27773.2
- C-ELV-FA-2155: Expenses: 1 13660.9
- C-ELV-FA-2195: Expenses: 1 2769.38
- C-ELV-FA-2165: Expenses: 1 22768.2
- C-ELV-FA-2175: Expenses: 1 27321.8
- C-ELV-FA-2185: Expenses: 1 27321.8
- C-ELV-MSPA-2155: Expenses: 1 6994.34
- C-ELV-MSPA-2195: Expenses: 1 2769.38
- C-ELV-MSPA-2165: Expenses: 1 6994.34
- C-ELV-MSPA-2175: Expenses: 1 16320.1
- C-ELV-MSPA-2185: Expenses: 1 16320.1

| ID | WBS | Activity | Duration | Start | Finish | Predecessors | Total float | Free float | Cost | AREA |
| --- | --- | --- | --- | --- | --- | --- | --- | --- | --- | --- |
|  | 3 | **IP CCTV & Access Control System** |  | 2016-04-13 | 2016-09-04 |  |  |  |  |  |
| C-ELV-CCTV-2155 |  | Installation of CCTV first Fix Conduits, Boxes within block work, Gypsum Boards & Raised FLooring at level 47 | 20d | 2016-04-13 | 2016-05-05 | C-F-P-1303, C-F-P-1293, SD-CS-L47-1412, C-ELV-CCTV-2405 SS | 49d | 1d | 8,161.35 | GEN |
| C-ELV-CCTV-2195 |  | Installation of Cable Trays & Truncking at level 47 | 25d | 2016-05-12 | 2016-06-09 | C-ELV-FA-2195 SS+5d | 17d | 0d | 2,769.38 |  |
| C-ELV-CCTV-2165 |  | Installation of second fix (Cabling & Wirring etc..) at level 47 | 20d | 2016-06-11 | 2016-07-03 | C-ELV-CCTV-2155, C-ELV-CCTV-2195 | 20d | 0d | 19,043.14 | GEN |
| C-ELV-CCTV-2175 |  | Installation & Connection of Camera's & Alarms at level 47 | 18d | 2016-07-04 | 2016-07-27 | C-ELV-CCTV-2165 | 20d | 3d | 183,698.91 | GEN |
| C-ELV-CCTV-2185 |  | Installtion & Connection of Racks, Panels etc... at level 47 | 25d | 2016-08-07 | 2016-09-04 | C-ELV-CCTV-2175 FF, C-ELV-CCTV-2435 SS | 123d | 0d | 7,322.52 |  |
|  | 7 | **Communication System** |  | 2016-04-13 | 2016-08-29 |  |  |  |  |  |
| C-ELV-CS-2155 |  | Installation of CS first fix (Conduits, Boxes within block work, Gypsum Boards & Raised FLooring at level 47 | 20d | 2016-04-13 | 2016-05-05 | C-F-P-1303, C-F-P-1293, SD-CS-L47-1332 | 55d | 2d | 27,356.12 | GEN |
| C-ELV-CS-2195 |  | Installation of Cable Trays & Truncking at level 47 | 25d | 2016-04-19 | 2016-05-17 | C-MEP-E-2636 SS | 17d | 0d | 2,769.38 |  |
| C-ELV-CS-2165 |  | Installation of second fix (Cabling & Wirring etc..) at level 47 | 25d | 2016-05-18 | 2016-06-15 | C-ELV-CS-2155, C-ELV-CS-2195 | 45d | 0d | 82,068.35 | GEN |
| C-ELV-CS-2175 |  | Installation & Connection of Wireless Access points & IP dect phone & RJ 45 at level 47 | 8d | 2016-06-16 | 2016-06-25 | C-ELV-CS-2165 | 45d | 28d | 93,342.54 | GEN |
| C-ELV-CS-2185 |  | Installtion & Connection of Controller & Instrumentation at level 47 | 20d | 2016-08-07 | 2016-08-29 | C-ELV-CS-2175, C-ELV-CS-2435 SS | 153d | 0d | 223,314.69 |  |
|  | 4 | **IP, SMATV & QAM Television System** |  | 2016-04-13 | 2016-08-21 |  |  |  |  |  |
| C-ELV-SMATV-2155 |  | Installation of SMATV first Fix Conduits, Boxes within block work , Gypsum Boards & Raised FLooring at level 47 | 20d | 2016-04-13 | 2016-05-05 | C-F-P-1303, C-F-P-1293, SD-CS-L47-1432, C-ELV-SMATV-2405 SS | 53d | 1d | 4,452.18 | GEN |
| C-ELV-SMATV-2195 |  | Installation of Cable Trays & Truncking at level 47 | 25d | 2016-05-18 | 2016-06-15 | C-ELV-CCTV-2195 SS+5d | 17d | 0d | 2,769.38 |  |
| C-ELV-SMATV-2165 |  | Installation of second fix (Cabling & Wirring etc..) at level 47 | 16d | 2016-06-16 | 2016-07-04 | C-ELV-SMATV-2155, C-ELV-SMATV-2195 | 19d | 0d | 10,388.41 | GEN |
| C-ELV-SMATV-2175 |  | Installation & Connection of Outlets, switches and splitter at level 47 | 18d | 2016-07-09 | 2016-07-28 | C-ELV-SMATV-2165 | 19d | 0d | 6,537.45 | GEN |
| C-ELV-SMATV-2185 |  | Installtion & Connection of SMATV & QAM fiber & receiver at level 47 | 20d | 2016-07-30 | 2016-08-21 | C-ELV-SMATV-2175, C-ELV-SMATV-2435 SS | 140d | 1d | 2,419.21 |  |
|  | 5 | **BMS system** |  | 2016-04-16 | 2016-08-25 |  |  |  |  |  |
| C-MEP-BMS-2155 |  | Installation of BMS first Fix Conduits, Boxes within block work , Gypsum Boards & Raised FLooring at level 47 | 20d | 2016-04-16 | 2016-05-08 | C-F-P-1303, C-F-P-1293, SD-CS-L47-1312, C-ELV-CS-2405 SS, C-MEP-BMS-2405 SS | 50d | 0d | 8,895.95 | GEN |
| C-MEP-BMS-2195 |  | Installation of Cable trays & Trunking at level 47 | 20d | 2016-05-24 | 2016-06-15 | C-ELV-SMATV-2195 SS+5d | 17d | 0d |  |  |
| C-MEP-BMS-2165 |  | Installation of BMS Cabling & Wirring at level 47 | 16d | 2016-06-16 | 2016-07-04 | C-MEP-BMS-2155, C-MEP-BMS-2195 | 17d | 0d | 11,861.27 | GEN |
| C-MEP-BMS-2175 |  | Installation & Connection of BMS Sensors, Relays, & Valves at level 47 | 20d | 2016-07-09 | 2016-07-31 | C-MEP-BMS-2165, C-MEP-PD-2185, C-MEP-PD-2175, C-MEP-FF-1734, C-MEP-AC-3508, C-MEP-AC-3488, C-MEP-AC-3498 | 17d | 0d | 14,826.58 | GEN |
| C-MEP-BMS-2185 |  | Installtion & Connection of BMS Racks, Panels etc... at level 47 | 20d | 2016-08-03 | 2016-08-25 | C-MEP-BMS-2175, C-MEP-BMS-2435 SS | 146d | 0d | 14,826.58 |  |

Notes:
- C-ELV-CCTV-2155: Expenses: 1 8161.35
- C-ELV-CCTV-2195: Expenses: 1 2769.38
- C-ELV-CCTV-2165: Expenses: 1 19043.1
- C-ELV-CCTV-2175: Expenses: 1 183699
- C-ELV-CCTV-2185: Expenses: 1 7322.52
- C-ELV-CS-2155: Expenses: 1 27356.1
- C-ELV-CS-2195: Expenses: 1 2769.38
- C-ELV-CS-2165: Expenses: 1 82068.4
- C-ELV-CS-2175: Expenses: 1 93342.5
- C-ELV-CS-2185: Expenses: 1 223315
- C-ELV-SMATV-2155: Expenses: 1 4452.18
- C-ELV-SMATV-2195: Expenses: 1 2769.38
- C-ELV-SMATV-2165: Expenses: 1 10388.4
- C-ELV-SMATV-2175: Expenses: 1 6537.45
- C-ELV-SMATV-2185: Expenses: 1 2419.21
- C-MEP-BMS-2155: Expenses: 1 8895.95
- C-MEP-BMS-2165: Expenses: 1 11861.3
- C-MEP-BMS-2175: Expenses: 1 14826.6
- C-MEP-BMS-2185: Expenses: 1 14826.6

| ID | WBS | Activity | Duration | Start | Finish | Predecessors | Total float | Free float | Cost | AREA |
| --- | --- | --- | --- | --- | --- | --- | --- | --- | --- | --- |
|  | 31 | **MEP - Level 48** |  | 2016-03-22 | 2017-01-03 |  |  |  |  |  |
|  | 1 | **Electrical** |  | 2016-04-07 | 2017-01-03 |  |  |  |  |  |
| C-MEP-E-2826 |  | Installation of first Electrical Fix Conduits, Boxes within block work & Gypsum Boards at level 48 | 20d | 2016-04-07 | 2016-04-30 | C-F-P-1413, C-MEP-E-2346 | 20d | 7d | 55,235.7 | GEN |
| C-MEP-E-2876 |  | Installation of Cable Trays & Truncking at level 48 | 18d | 2016-04-20 | 2016-05-10 | C-MEP-FF-1884 SS+10d, C-MEP-PD-2355 SS+5d, C-MEP-E-2396 | 11d | 0d | 21,017.55 |  |
| C-MEP-E-2836 |  | Installation of Electrical Second Fix (Cabling & Wirring etc..). at level 48 | 18d | 2016-05-11 | 2016-05-31 | C-MEP-E-2826, C-MEP-E-2876, C-MEP-E-2356 | 11d | 0d | 190,528.33 | GEN |
| C-MEP-E-2846 |  | Installation & Connection of Electrical DB's, SMDB's at level 48 | 16d | 2016-06-01 | 2016-06-19 | C-MEP-E-2836, C-MEP-E-2786 SS | 11d | 0d | 78,921.15 | GEN |
| C-MEP-E-2866 |  | Installation & Connection of Lighting Fixtures & Sockets at level 48 | 14d | 2016-12-19 | 2017-01-03 | C-MEP-E-2836, C-F-CF-3327, C-F-CF-3317, C-F-WF-1894, C-F-WF-1904, C-MEP-E-2686 | 98d | 80d | 71,857.69 | GEN |
|  | 2 | **HVAC** |  | 2016-03-22 | 2016-12-14 |  |  |  |  |  |
| C-MEP-AC-3768 |  | Installation of Ductwork, Insulation & Dampers at level 48 | 23d | 2016-03-22 | 2016-04-17 | C-F-P-1413 SS, C-MEP-AC-3528, SD-CS-L48-1132 | 16d | 0d | 94,575.69 | GEN |
| C-MEP-AC-3788 |  | Installation of Chilled Water Pipes & Valves at level 48 | 25d | 2016-04-03 | 2016-05-01 | C-MEP-AC-3768 SS+10d, C-MEP-AC-2828 | 66d | 0d | 30,741.92 | GEN |
| C-MEP-AC-3828 |  | Installation of HVAC equipments AHU's, FCU's, ERU's, VAV's, CAV's & Fans at level 48 | 25d | 2016-04-21 | 2016-05-19 | C-MEP-AC-3818 FF, C-MEP-AC-3808 FF, C-MEP-AC-3768 SS | 62d | 40d | 122,865.53 | GEN |
| C-MEP-AC-3808 |  | Pressure testing & Insulation of Chilled Water Pipes at level 48 | 12d | 2016-05-02 | 2016-05-15 | C-MEP-AC-3788 | 66d | 0d | 8,821.1 | GEN |
| C-MEP-AC-3818 |  | Pressure testing of Ductwork at level 48 | 8d | 2016-05-11 | 2016-05-19 | C-MEP-AC-3768, C-MEP-AC-3498 | 62d | 0d |  | GEN |
| C-MEP-AC-3798 |  | Installation of Chilled Water Pipes Control Devices & Isolator at level 48 | 8d | 2016-05-16 | 2016-05-24 | C-MEP-AC-3808 | 78d | 56d | 2,889.38 | GEN |
| C-MEP-AC-3778 |  | Installation of Silencers, Attenuators, Isolators & Detectors at level 48 | 12d | 2016-05-21 | 2016-06-02 | C-MEP-AC-3818 | 70d | 48d | 28,274.51 | GEN |
| C-MEP-AC-3838 |  | Installation of Grilles, Diffusers & Controller at level 48 | 12d | 2016-12-01 | 2016-12-14 | C-MEP-AC-3828, C-F-CF-3327, C-F-CF-3317, C-F-WF-1904 FF, C-F-WF-1894 FF, C-MEP-AC-3598 SS | 22d | 0d | 55,880.87 | GEN |
|  | 3 | **Fire Fighting** |  | 2016-04-03 | 2016-09-07 |  |  |  |  |  |
| C-MEP-FF-1884 |  | Installation of FIre fighting Pipes at level 48 | 25d | 2016-04-03 | 2016-05-01 | C-MEP-AC-3768 SS+10d, SD-CS-L48-1152 | 16d | 0d | 45,406.88 | GEN |
| C-MEP-FF-1904 |  | Pressure testing of fire fighting pipes at level 48 | 8d | 2016-05-02 | 2016-05-10 | C-MEP-FF-1884 | 50d | 0d | 5,280.67 | GEN |
| C-MEP-FF-1894 |  | Installation of fire Fighting Valves at level 48 | 20d | 2016-05-11 | 2016-06-02 | C-MEP-FF-1904 | 50d | 28d | 18,427.34 | GEN |
| C-MEP-FF-1914 |  | Installation of Fire Fighting Sprinklers & Fire hose Cabinets & Extinguishers at level 48 | 14d | 2016-08-23 | 2016-09-07 | C-MEP-FF-1894, C-F-CF-3317, C-F-CF-3307, C-MEP-FF-1904 | 82d | 0d | 64,097.37 | GEN |
|  | 4 | **Plumbing & Drainage** |  | 2016-04-14 | 2016-12-10 |  |  |  |  |  |
| C-MEP-PD-2355 |  | Installation of Water Pipes & Valves (Hot & Cold atc..) at level 48 | 20d | 2016-04-14 | 2016-05-07 | C-MEP-FF-1884 SS, C-F-P-1423, SD-CS-L48-1192 | 11d | 0d | 83,874.06 | GEN |
| C-MEP-PD-2365 |  | Installation drainage Pipes at level 48 | 25d | 2016-04-14 | 2016-05-12 | C-MEP-PD-2355 SS | 60d | 0d | 30,204.4 | GEN |
| C-MEP-PD-2375 |  | Pressure testing & Insullation of water pipes at level 48 | 8d | 2016-05-08 | 2016-05-16 | C-MEP-PD-2355 | 65d | 43d | 9,573.63 | GEN |
| C-MEP-PD-2385 |  | Pressure testing of drainage pipes at level 48 | 8d | 2016-05-14 | 2016-05-22 | C-MEP-PD-2365 | 60d | 38d | 1,651.42 | GEN |
| C-MEP-PD-2395 |  | Installation of Outlets, Drains, Gullies, Cowls, & Clean out at level 48 | 20d | 2016-11-17 | 2016-12-10 | C-MEP-PD-2375, C-MEP-PD-2375 FF, C-F-FF-1894, C-F-WF-1894, C-F-FF-1894 FF, C-F-WF-1914, C-F-WF-1894 FF, C-F-DW-1894, C-MEP-PD-2095 | 120d | 105d | 13,120.28 | GEN |

Notes:
- C-MEP-E-2826: Expenses: 1 55235.7
- C-MEP-E-2876: Expenses: 1 21017.5
- C-MEP-E-2836: Expenses: 1 57962.7; 2 132566
- C-MEP-E-2846: Expenses: 1 78921.1
- C-MEP-E-2866: Expenses: 1 71857.7
- C-MEP-AC-3768: Expenses: 1 94575.7
- C-MEP-AC-3788: Expenses: 1 30741.9
- C-MEP-AC-3828: Expenses: 1 122866
- C-MEP-AC-3808: Expenses: 1 8821.1
- C-MEP-AC-3798: Expenses: 1 2889.38
- C-MEP-AC-3778: Expenses: 1 28274.5
- C-MEP-AC-3838: Expenses: 1 55880.9
- C-MEP-FF-1884: Expenses: 1 45406.9
- C-MEP-FF-1904: Expenses: 1 5280.67
- C-MEP-FF-1894: Expenses: 1 18427.3
- C-MEP-FF-1914: Expenses: 1 64097.4
- C-MEP-PD-2355: Expenses: 1 83874.1
- C-MEP-PD-2365: Expenses: 1 30204.4
- C-MEP-PD-2375: Expenses: 1 9573.63
- C-MEP-PD-2385: Expenses: 1 1651.42
- C-MEP-PD-2395: Expenses: 1 13120.3

| ID | WBS | Activity | Duration | Start | Finish | Predecessors | Total float | Free float | Cost | AREA |
| --- | --- | --- | --- | --- | --- | --- | --- | --- | --- | --- |
|  | 7 | **ELV systems** |  | 2016-04-14 | 2016-09-04 |  |  |  |  |  |
|  | 1 | **Room Management System** |  | 2016-04-14 | 2016-09-04 |  |  |  |  |  |
| C-ELV-RMS-2355 |  | Installation of RMS first fix (Conduits, Boxes within block work , Gypsum Boards & Raised FLooring at level 48 | 20d | 2016-04-14 | 2016-05-07 | C-F-P-1423, C-F-P-1413, SD-CS-L48-1372, C-ELV-RMS-2155 SS | 36d | 1d | 11,902.78 | GEN |
| C-ELV-RMS-2395 |  | Installation of Cable Trays & Truncking at level 48 | 25d | 2016-04-26 | 2016-05-24 | C-ELV-CS-2395 SS+5d | 22d | 0d | 2,769.38 |  |
| C-ELV-RMS-2365 |  | Installation of second fix (Cabling & Wirring etc..)at level 48 | 25d | 2016-05-25 | 2016-06-22 | C-ELV-RMS-2355, C-ELV-RMS-2395 | 28d | 0d | 11,902.78 | GEN |
| C-ELV-RMS-2375 |  | Installation & Connection of ethernets & HVAC thermostates etc.. at level 48 | 25d | 2016-06-23 | 2016-07-25 | C-ELV-RMS-2365 | 28d | 6d | 27,773.16 | GEN |
| C-ELV-RMS-2385 |  | Installtion & Connection of Panels, Controller, switches, server etc..) at level 48 | 20d | 2016-08-13 | 2016-09-04 | C-ELV-RMS-2375, C-ELV-RMS-2185 SS | 128d | 0d | 27,773.16 |  |
|  | 12 | **Fire Alarm & Detection System** |  | 2016-04-14 | 2016-08-23 |  |  |  |  |  |
| C-ELV-FA-2355 |  | Installation of FA first Fix Conduits, Boxes within block work , Gypsum Boards & Raised FLooring at level 48 | 20d | 2016-04-14 | 2016-05-07 | C-F-P-1423, C-F-P-1413, C-ELV-FA-2155 SS | 41d | 1d | 13,660.92 | GEN |
| C-ELV-FA-2395 |  | Installation of Cable Trays & Truncking at level 48 | 25d | 2016-05-08 | 2016-06-05 | C-ELV-MSPA-2395 SS+5d, SD-CS-L48-1412 | 22d | 0d | 2,769.38 |  |
| C-ELV-FA-2365 |  | Installation of second fix (Cabling & Wirring etc..) at level 48 | 20d | 2016-06-06 | 2016-06-28 | C-ELV-FA-2355, C-ELV-FA-2395 | 23d | 0d | 22,768.2 | GEN |
| C-ELV-FA-2375 |  | Installation & Connection of heat detector, smoke detector, flame detector etc.. at level 48 | 25d | 2016-06-29 | 2016-07-31 | C-ELV-FA-2365 | 23d | 0d | 27,321.84 | GEN |
| C-ELV-FA-2385 |  | Installtion & Connection of Racks & Panels at level 48 | 20d | 2016-08-01 | 2016-08-23 | C-ELV-FA-2375, C-ELV-FA-2185 SS | 138d | 10d | 27,321.84 |  |
|  | 2 | **Music System & Public Address System** |  | 2016-04-14 | 2016-08-23 |  |  |  |  |  |
| C-ELV-MSPA-2355 |  | Installation of MS/PA first fix (Conduits, Boxes within block work, Gypsum Boards & Raised FLooring at level 48 | 20d | 2016-04-14 | 2016-05-07 | C-F-P-1423, C-F-P-1413, SD-CS-L48-1392, C-ELV-MSPA-2155 SS | 43d | 1d | 6,994.34 | GEN |
| C-ELV-MSPA-2395 |  | Installation of Cable Trays & Truncking at level 48 | 25d | 2016-05-02 | 2016-05-30 | C-ELV-RMS-2395 SS+5d | 22d | 0d | 2,769.38 |  |
| C-ELV-MSPA-2365 |  | Installation of second fix (Cabling & Wirring etc..) at level 48 | 25d | 2016-05-31 | 2016-06-28 | C-ELV-MSPA-2355, C-ELV-MSPA-2395 | 23d | 0d | 6,994.34 | GEN |
| C-ELV-MSPA-2375 |  | Installation & Connection of speakers, Amplifier & Controller at level 48 | 25d | 2016-06-29 | 2016-07-31 | C-ELV-MSPA-2365 | 23d | 0d | 16,320.12 | GEN |
| C-ELV-MSPA-2385 |  | Installtion & Connection of Media hub, panels and processor at level 48 | 20d | 2016-08-01 | 2016-08-23 | C-ELV-MSPA-2375, C-ELV-MSPA-2185 SS | 138d | 10d | 16,320.12 |  |
|  | 3 | **IP CCTV & Access Control System** |  | 2016-04-14 | 2016-09-04 |  |  |  |  |  |
| C-ELV-CCTV-2355 |  | Installation of CCTV first Fix Conduits, Boxes within block work, Gypsum Boards & Raised FLooring at level 48 | 20d | 2016-04-14 | 2016-05-07 | C-F-P-1423, C-F-P-1413, SD-CS-L48-1432, C-ELV-CCTV-2155 SS | 48d | 1d | 8,161.35 | GEN |
| C-ELV-CCTV-2395 |  | Installation of Cable Trays & Truncking at level 48 | 25d | 2016-05-14 | 2016-06-11 | C-ELV-FA-2395 SS+5d | 22d | 0d | 2,769.38 |  |
| C-ELV-CCTV-2365 |  | Installation of second fix (Cabling & Wirring etc..) at level 48 | 20d | 2016-06-12 | 2016-07-04 | C-ELV-CCTV-2355, C-ELV-CCTV-2395 | 25d | 0d | 19,043.14 | GEN |
| C-ELV-CCTV-2375 |  | Installation & Connection of Camera's & Alarms at level 48 | 18d | 2016-07-09 | 2016-07-28 | C-ELV-CCTV-2365 | 25d | 3d | 183,698.91 | GEN |
| C-ELV-CCTV-2385 |  | Installtion & Connection of Racks, Panels etc... at level 48 | 25d | 2016-08-07 | 2016-09-04 | C-ELV-CCTV-2375 FF, C-ELV-CCTV-2185 SS | 123d | 0d | 7,322.52 |  |

Notes:
- C-ELV-RMS-2355: Expenses: 1 11902.8
- C-ELV-RMS-2395: Expenses: 1 2769.38
- C-ELV-RMS-2365: Expenses: 1 11902.8
- C-ELV-RMS-2375: Expenses: 1 27773.2
- C-ELV-RMS-2385: Expenses: 1 27773.2
- C-ELV-FA-2355: Expenses: 1 13660.9
- C-ELV-FA-2395: Expenses: 1 2769.38
- C-ELV-FA-2365: Expenses: 1 22768.2
- C-ELV-FA-2375: Expenses: 1 27321.8
- C-ELV-FA-2385: Expenses: 1 27321.8
- C-ELV-MSPA-2355: Expenses: 1 6994.34
- C-ELV-MSPA-2395: Expenses: 1 2769.38
- C-ELV-MSPA-2365: Expenses: 1 6994.34
- C-ELV-MSPA-2375: Expenses: 1 16320.1
- C-ELV-MSPA-2385: Expenses: 1 16320.1
- C-ELV-CCTV-2355: Expenses: 1 8161.35
- C-ELV-CCTV-2395: Expenses: 1 2769.38
- C-ELV-CCTV-2365: Expenses: 1 19043.1
- C-ELV-CCTV-2375: Expenses: 1 183699
- C-ELV-CCTV-2385: Expenses: 1 7322.52

| ID | WBS | Activity | Duration | Start | Finish | Predecessors | Total float | Free float | Cost | AREA |
| --- | --- | --- | --- | --- | --- | --- | --- | --- | --- | --- |
|  | 7 | **Communication System** |  | 2016-04-16 | 2016-08-29 |  |  |  |  |  |
| C-ELV-CS-2355 |  | Installation of CS first fix (Conduits, Boxes within block work, Gypsum Boards & Raised FLooring at level 48 | 20d | 2016-04-16 | 2016-05-08 | C-F-P-1423, C-F-P-1413, SD-CS-L48-1352, C-MEP-BMS-2155 SS | 59d | 0d | 27,356.12 | GEN |
| C-ELV-CS-2395 |  | Installation of Cable Trays & Truncking at level 48 | 25d | 2016-04-20 | 2016-05-18 | C-MEP-E-2876 SS | 22d | 0d | 2,769.38 |  |
| C-ELV-CS-2365 |  | Installation of second fix (Cabling & Wirring etc..) at level 48 | 25d | 2016-05-19 | 2016-06-16 | C-ELV-CS-2355, C-ELV-CS-2395 | 50d | 0d | 82,068.35 | GEN |
| C-ELV-CS-2375 |  | Installation & Connection of Wireless Access points & IP dect phone & RJ 45 at level 48 | 8d | 2016-06-18 | 2016-06-26 | C-ELV-CS-2365 | 50d | 28d | 93,342.54 | GEN |
| C-ELV-CS-2385 |  | Installtion & Connection of Controller & Instrumentation at level 48 | 20d | 2016-08-07 | 2016-08-29 | C-ELV-CS-2375, C-ELV-CS-2185 SS | 153d | 0d | 223,314.69 |  |
|  | 4 | **IP, SMATV & QAM Television System** |  | 2016-04-14 | 2016-08-22 |  |  |  |  |  |
| C-ELV-SMATV-2355 |  | Installation of SMATV first Fix Conduits, Boxes within block work , Gypsum Boards & Raised FLooring at level 48 | 20d | 2016-04-14 | 2016-05-07 | C-F-P-1423, C-F-P-1413, SD-CS-L48-1452, C-ELV-SMATV-2155 SS | 52d | 1d | 4,452.18 | GEN |
| C-ELV-SMATV-2395 |  | Installation of Cable Trays & Truncking at level 48 | 25d | 2016-05-19 | 2016-06-16 | C-ELV-CCTV-2395 SS+5d | 22d | 0d | 2,769.38 |  |
| C-ELV-SMATV-2365 |  | Installation of second fix (Cabling & Wirring etc..) at level 48 | 16d | 2016-06-18 | 2016-07-09 | C-ELV-SMATV-2355, C-ELV-SMATV-2395 | 24d | 0d | 10,388.41 | GEN |
| C-ELV-SMATV-2375 |  | Installation & Connection of Outlets, switches and splitter at level 48 | 18d | 2016-07-10 | 2016-07-30 | C-ELV-SMATV-2365 | 24d | 0d | 6,537.45 | GEN |
| C-ELV-SMATV-2385 |  | Installtion & Connection of SMATV & QAM fiber & receiver at level 48 | 20d | 2016-07-31 | 2016-08-22 | C-ELV-SMATV-2375, C-ELV-SMATV-2185 SS | 139d | 10d | 2,419.21 |  |
|  | 5 | **BMS system** |  | 2016-04-16 | 2016-08-25 |  |  |  |  |  |
| C-MEP-BMS-2355 |  | Installation of BMS first Fix Conduits, Boxes within block work , Gypsum Boards & Raised FLooring at level 48 | 20d | 2016-04-16 | 2016-05-08 | C-F-P-1423, C-F-P-1413, SD-CS-L48-1332, C-MEP-BMS-2155 SS | 56d | 0d | 8,895.95 | GEN |
| C-MEP-BMS-2395 |  | Installation of Cable trays & Trunking at level 48 | 20d | 2016-05-25 | 2016-06-16 | C-ELV-SMATV-2395 SS+5d | 22d | 0d |  |  |
| C-MEP-BMS-2365 |  | Installation of BMS Cabling & Wirring at level 48 | 16d | 2016-06-18 | 2016-07-09 | C-MEP-BMS-2355, C-MEP-BMS-2395 | 22d | 0d | 11,861.27 | GEN |
| C-MEP-BMS-2375 |  | Installation & Connection of BMS Sensors, Relays, & Valves at level 48 | 20d | 2016-07-10 | 2016-08-01 | C-MEP-BMS-2365, C-MEP-PD-2385, C-MEP-PD-2375, C-MEP-FF-1894, C-MEP-AC-3828, C-MEP-AC-3808, C-MEP-AC-3818 | 22d | 0d | 14,826.58 | GEN |
| C-MEP-BMS-2385 |  | Installtion & Connection of BMS Racks, Panels etc... at level 48 | 20d | 2016-08-03 | 2016-08-25 | C-MEP-BMS-2375, C-MEP-BMS-2185 SS | 146d | 9d | 14,826.58 |  |
|  | 30 | **MEP - Level 49** |  | 2016-03-30 | 2017-01-25 |  |  |  |  |  |
|  | 1 | **Electrical** |  | 2016-04-16 | 2017-01-25 |  |  |  |  |  |
| C-MEP-E-2946 |  | Installation of first Electrical Fix Conduits, Boxes within block work & Gypsum Boards at level 49 | 20d | 2016-04-16 | 2016-05-08 | C-F-P-1473, C-MEP-E-2466 | 15d | 11d | 55,235.7 | GEN |
| C-MEP-E-2996 |  | Installation of Cable Trays & Truncking at level 49 | 18d | 2016-05-02 | 2016-05-22 | C-MEP-FF-1964 SS+10d, C-MEP-PD-2455 SS+3d, C-MEP-E-2516 | 3d | 0d | 21,017.55 |  |
| C-MEP-E-2956 |  | Installation of Electrical Second Fix (Cabling & Wirring etc..). at level 49 | 18d | 2016-05-23 | 2016-06-12 | C-MEP-E-2946, C-MEP-E-2996, C-MEP-E-2476 | 3d | 0d | 190,528.33 | GEN |
| C-MEP-E-2966 |  | Installation & Connection of Electrical DB's, SMDB's & MCC's at level 49 | 16d | 2016-06-13 | 2016-06-30 | C-MEP-E-2956, C-MEP-E-2726 | 3d | 0d | 348,656.44 | GEN |
| C-MEP-E-2986 |  | Installation & Connection of Lighting Fixtures & Sockets at level 49 | 14d | 2017-01-10 | 2017-01-25 | C-MEP-E-2956, C-F-CF-3467, C-F-CF-3457, C-F-WF-1974, C-F-WF-1984, C-MEP-E-3046 | 69d | 51d | 71,857.69 | GEN |

Notes:
- C-ELV-CS-2355: Expenses: 1 27356.1
- C-ELV-CS-2395: Expenses: 1 2769.38
- C-ELV-CS-2365: Expenses: 1 82068.4
- C-ELV-CS-2375: Expenses: 1 93342.5
- C-ELV-CS-2385: Expenses: 1 223315
- C-ELV-SMATV-2355: Expenses: 1 4452.18
- C-ELV-SMATV-2395: Expenses: 1 2769.38
- C-ELV-SMATV-2365: Expenses: 1 10388.4
- C-ELV-SMATV-2375: Expenses: 1 6537.45
- C-ELV-SMATV-2385: Expenses: 1 2419.21
- C-MEP-BMS-2355: Expenses: 1 8895.95
- C-MEP-BMS-2365: Expenses: 1 11861.3
- C-MEP-BMS-2375: Expenses: 1 14826.6
- C-MEP-BMS-2385: Expenses: 1 14826.6
- C-MEP-E-2946: Expenses: 1 55235.7
- C-MEP-E-2996: Expenses: 1 21017.5
- C-MEP-E-2956: Expenses: 1 57962.7; 2 132566
- C-MEP-E-2966: Expenses: 1 78921.1; 2 269735
- C-MEP-E-2986: Expenses: 1 71857.7

| ID | WBS | Activity | Duration | Start | Finish | Predecessors | Total float | Free float | Cost | AREA |
| --- | --- | --- | --- | --- | --- | --- | --- | --- | --- | --- |
|  | 2 | **HVAC** |  | 2016-03-30 | 2017-01-09 |  |  |  |  |  |
| C-MEP-AC-3928 |  | Installation of Ductwork, Insulation & Dampers at level 49 | 23d | 2016-03-30 | 2016-04-25 | C-F-P-1473 SS, C-MEP-AC-4008, SD-CS-L49-1152 | 11d | 0d | 82,961.13 | GEN |
| C-MEP-AC-3948 |  | Installation of Chilled Water Pipes & Valves at level 49 | 25d | 2016-04-11 | 2016-05-09 | C-MEP-AC-3928 SS+10d, C-MEP-AC-3148 | 65d | 0d | 30,741.92 | GEN |
| C-MEP-AC-3988 |  | Installation of HVAC equipments AHU's, FCU's, ERU's, VAV's, CAV's & Fans at level 49 | 25d | 2016-04-25 | 2016-05-23 | C-MEP-AC-3978 FF, C-MEP-AC-3968 FF, C-MEP-AC-3928 SS | 65d | 47d | 96,031.58 | GEN |
| C-MEP-AC-3968 |  | Pressure testing & Insulation of Chilled Water Pipes at level 49 | 12d | 2016-05-10 | 2016-05-23 | C-MEP-AC-3948 | 65d | 0d | 8,821.1 | GEN |
| C-MEP-AC-3978 |  | Pressure testing of Ductwork at level 49 | 8d | 2016-05-11 | 2016-05-19 | C-MEP-AC-3928, C-MEP-AC-3818 SS | 68d | 0d |  | GEN |
| C-MEP-AC-3938 |  | Installation of Silencers, Attenuators, Isolators & Detectors at level 49 | 12d | 2016-05-21 | 2016-06-02 | C-MEP-AC-3978 | 76d | 58d | 28,274.51 | GEN |
| C-MEP-AC-3958 |  | Installation of Chilled Water Pipes Control Devices & Isolator at level 49 | 8d | 2016-05-24 | 2016-06-01 | C-MEP-AC-3968 | 77d | 59d | 2,889.38 | GEN |
| C-MEP-AC-3998 |  | Installation of Grilles, Diffusers & Controller at level 49 | 12d | 2016-12-27 | 2017-01-09 | C-MEP-AC-3988, C-F-CF-3467, C-F-CF-3457, C-F-WF-1984 FF, C-F-CF-3457 FF, C-F-WF-1974 FF, C-MEP-AC-4078 | 55d | 40d | 55,880.87 | GEN |
|  | 3 | **Fire Fighting** |  | 2016-04-11 | 2016-10-02 |  |  |  |  |  |
| C-MEP-FF-1964 |  | Installation of FIre fighting Pipes at level 49 | 25d | 2016-04-11 | 2016-05-09 | C-MEP-AC-3928 SS+10d, SD-CS-L49-1172 | 11d | 0d | 45,406.88 | GEN |
| C-MEP-FF-1984 |  | Pressure testing of fire fighting pipes at level 49 | 8d | 2016-05-10 | 2016-05-18 | C-MEP-FF-1964 | 49d | 0d | 5,280.67 | GEN |
| C-MEP-FF-1974 |  | Installation of fire Fighting Valves at level 49 | 20d | 2016-05-19 | 2016-06-11 | C-MEP-FF-1984 | 49d | 31d | 18,427.34 | GEN |
| C-MEP-FF-1994 |  | Installation of Fire Fighting Sprinklers & Fire hose Cabinets & Extinguishers at level 49 | 14d | 2016-09-15 | 2016-10-02 | C-MEP-FF-1974, C-F-CF-3457, C-F-CF-3447, C-MEP-FF-1984 | 65d | 0d | 64,097.37 | GEN |
|  | 4 | **Plumbing & Drainage** |  | 2016-04-28 | 2017-01-03 |  |  |  |  |  |
| C-MEP-PD-2455 |  | Installation of Water Pipes & Valves (Hot & Cold atc..) at level 49 | 20d | 2016-04-28 | 2016-05-21 | C-MEP-FF-1964 SS, C-F-P-1483, SD-CS-L49-1212 | 3d | 0d | 83,874.06 | GEN |
| C-MEP-PD-2465 |  | Installation drainage Pipes at level 49 | 25d | 2016-04-28 | 2016-05-26 | C-MEP-PD-2455 SS | 54d | 0d | 30,204.4 | GEN |
| C-MEP-PD-2475 |  | Pressure testing & Insullation of water pipes at level 49 | 8d | 2016-05-22 | 2016-05-30 | C-MEP-PD-2455 | 59d | 41d | 9,573.63 | GEN |
| C-MEP-PD-2485 |  | Pressure testing of drainage pipes at level 49 | 8d | 2016-05-28 | 2016-06-05 | C-MEP-PD-2465 | 54d | 36d | 1,651.42 | GEN |
| C-MEP-PD-2495 |  | Installation of Outlets, Drains, Gullies, Cowls, & Clean out at level 49 | 20d | 2016-12-11 | 2017-01-03 | C-MEP-PD-2475, C-MEP-PD-2475 FF, C-F-FF-1974, C-F-WF-1974, C-F-FF-1974 FF, C-F-WF-1994, C-F-WF-1974 FF, C-F-DW-1974, C-MEP-PD-2245 | 100d | 85d | 13,120.28 | GEN |
|  | 7 | **ELV systems** |  | 2016-04-28 | 2016-09-04 |  |  |  |  |  |
|  | 1 | **Room Management System** |  | 2016-04-28 | 2016-09-04 |  |  |  |  |  |
| C-ELV-RMS-2455 |  | Installation of RMS first fix (Conduits, Boxes within block work , Gypsum Boards & Raised FLooring at level 49 | 20d | 2016-04-28 | 2016-05-21 | C-F-P-1483, C-F-P-1473, SD-CS-L49-1392, C-ELV-RMS-2355 SS | 24d | 0d | 11,902.78 | GEN |
| C-ELV-RMS-2495 |  | Installation of Cable Trays & Truncking at level 49 | 25d | 2016-05-08 | 2016-06-05 | C-ELV-CS-2495 SS+5d | 18d | 0d | 2,769.38 |  |
| C-ELV-RMS-2465 |  | Installation of second fix (Cabling & Wirring etc..) at level 49 | 25d | 2016-06-06 | 2016-07-04 | C-ELV-RMS-2455, C-ELV-RMS-2495 | 24d | 0d | 11,902.78 | GEN |
| C-ELV-RMS-2475 |  | Installation & Connection of ethernets & HVAC thermostates etc.. at level 49 | 25d | 2016-07-09 | 2016-08-06 | C-ELV-RMS-2465 | 24d | 5d | 27,773.16 | GEN |
| C-ELV-RMS-2485 |  | Installtion & Connection of Panels, Controller, switches, server etc..) at level 49 | 20d | 2016-08-13 | 2016-09-04 | C-ELV-RMS-2475, C-ELV-RMS-2385 SS | 128d | 3d | 27,773.16 |  |

Notes:
- C-MEP-AC-3928: Expenses: 1 82961.1
- C-MEP-AC-3948: Expenses: 1 30741.9
- C-MEP-AC-3988: Expenses: 1 96031.6
- C-MEP-AC-3968: Expenses: 1 8821.1
- C-MEP-AC-3938: Expenses: 1 28274.5
- C-MEP-AC-3958: Expenses: 1 2889.38
- C-MEP-AC-3998: Expenses: 1 55880.9
- C-MEP-FF-1964: Expenses: 1 45406.9
- C-MEP-FF-1984: Expenses: 1 5280.67
- C-MEP-FF-1974: Expenses: 1 18427.3
- C-MEP-FF-1994: Expenses: 1 64097.4
- C-MEP-PD-2455: Expenses: 1 83874.1
- C-MEP-PD-2465: Expenses: 1 30204.4
- C-MEP-PD-2475: Expenses: 1 9573.63
- C-MEP-PD-2485: Expenses: 1 1651.42
- C-MEP-PD-2495: Expenses: 1 13120.3
- C-ELV-RMS-2455: Expenses: 1 11902.8
- C-ELV-RMS-2495: Expenses: 1 2769.38
- C-ELV-RMS-2465: Expenses: 1 11902.8
- C-ELV-RMS-2475: Expenses: 1 27773.2
- C-ELV-RMS-2485: Expenses: 1 27773.2

| ID | WBS | Activity | Duration | Start | Finish | Predecessors | Total float | Free float | Cost | AREA |
| --- | --- | --- | --- | --- | --- | --- | --- | --- | --- | --- |
|  | 12 | **Fire Alarm & Detection System** |  | 2016-04-28 | 2016-09-04 |  |  |  |  |  |
| C-ELV-FA-2455 |  | Installation of FA first Fix Conduits, Boxes within block work , Gypsum Boards & Raised FLooring at level 49 | 20d | 2016-04-28 | 2016-05-21 | C-F-P-1483, C-F-P-1473, C-ELV-FA-2355 SS | 29d | 0d | 13,660.92 | GEN |
| C-ELV-FA-2495 |  | Installation of Cable Trays & Truncking at level 49 | 25d | 2016-05-19 | 2016-06-16 | C-ELV-MSPA-2495 SS+5d, SD-CS-L49-1432 | 18d | 0d | 2,769.38 |  |
| C-ELV-FA-2465 |  | Installation of second fix (Cabling & Wirring etc..) at level 49 | 20d | 2016-06-18 | 2016-07-13 | C-ELV-FA-2455, C-ELV-FA-2495 | 19d | 0d | 22,768.2 | GEN |
| C-ELV-FA-2475 |  | Installation & Connection of heat detector, smoke detector, flame detector etc.. at level 49 | 25d | 2016-07-14 | 2016-08-11 | C-ELV-FA-2465 | 19d | 0d | 27,321.84 | GEN |
| C-ELV-FA-2485 |  | Installtion & Connection of Racks & Panels at level 49 | 20d | 2016-08-13 | 2016-09-04 | C-ELV-FA-2475, C-ELV-FA-2385 SS | 128d | 8d | 27,321.84 |  |
|  | 2 | **Music System & Public Address System** |  | 2016-04-28 | 2016-09-04 |  |  |  |  |  |
| C-ELV-MSPA-2455 |  | Installation of MS/PA first fix (Conduits, Boxes within block work, Gypsum Boards & Raised FLooring at level 49 | 20d | 2016-04-28 | 2016-05-21 | C-F-P-1483, C-F-P-1473, SD-CS-L49-1412, C-ELV-MSPA-2355 SS | 37d | 0d | 6,994.34 | GEN |
| C-ELV-MSPA-2495 |  | Installation of Cable Trays & Truncking at level 49 | 25d | 2016-05-14 | 2016-06-11 | C-ELV-RMS-2495 SS+5d | 18d | 0d | 2,769.38 |  |
| C-ELV-MSPA-2465 |  | Installation of second fix (Cabling & Wirring etc..) at level 49 | 25d | 2016-06-12 | 2016-07-13 | C-ELV-MSPA-2455, C-ELV-MSPA-2495 | 19d | 0d | 6,994.34 | GEN |
| C-ELV-MSPA-2475 |  | Installation & Connection of speakers, Amplifier & Controller at level 49 | 25d | 2016-07-14 | 2016-08-11 | C-ELV-MSPA-2465 | 19d | 0d | 16,320.12 | GEN |
| C-ELV-MSPA-2485 |  | Installtion & Connection of Media hub, panels and processor at level 49 | 20d | 2016-08-13 | 2016-09-04 | C-ELV-MSPA-2475, C-ELV-MSPA-2385 SS | 128d | 8d | 16,320.12 |  |
|  | 3 | **IP CCTV & Access Control System** |  | 2016-04-28 | 2016-09-04 |  |  |  |  |  |
| C-ELV-CCTV-2455 |  | Installation of CCTV first Fix Conduits, Boxes within block work, Gypsum Boards & Raised FLooring at level 49 | 20d | 2016-04-28 | 2016-05-21 | C-F-P-1483, C-F-P-1473, SD-CS-L49-1452, C-ELV-CCTV-2355 SS | 36d | 0d | 8,161.35 | GEN |
| C-ELV-CCTV-2495 |  | Installation of Cable Trays & Truncking at level 49 | 25d | 2016-05-25 | 2016-06-22 | C-ELV-FA-2495 SS+5d | 18d | 0d | 2,769.38 |  |
| C-ELV-CCTV-2465 |  | Installation of second fix (Cabling & Wirring etc..) at level 49 | 20d | 2016-06-23 | 2016-07-19 | C-ELV-CCTV-2455, C-ELV-CCTV-2495 | 21d | 0d | 19,043.14 | GEN |
| C-ELV-CCTV-2475 |  | Installation & Connection of Camera's & Alarms at level 49 | 18d | 2016-07-20 | 2016-08-09 | C-ELV-CCTV-2465 | 21d | 3d | 183,698.91 | GEN |
| C-ELV-CCTV-2485 |  | Installtion & Connection of Racks, Panels etc... at level 49 | 25d | 2016-08-07 | 2016-09-04 | C-ELV-CCTV-2475 FF, C-ELV-CCTV-2385 SS | 123d | 0d | 7,322.52 |  |
|  | 7 | **Communication System** |  | 2016-04-28 | 2016-08-29 |  |  |  |  |  |
| C-ELV-CS-2455 |  | Installation of CS first fix (Conduits, Boxes within block work, Gypsum Boards & Raised FLooring at level 49 | 20d | 2016-04-28 | 2016-05-21 | C-F-P-1483, C-F-P-1473, SD-CS-L49-1372, C-ELV-CS-2355 SS | 54d | 0d | 27,356.12 | GEN |
| C-ELV-CS-2495 |  | Installation of Cable Trays & Truncking at level 49 | 25d | 2016-05-02 | 2016-05-30 | C-MEP-E-2996 SS | 18d | 0d | 2,769.38 |  |
| C-ELV-CS-2465 |  | Installation of second fix (Cabling & Wirring etc..) at level 49 | 25d | 2016-05-31 | 2016-06-28 | C-ELV-CS-2455, C-ELV-CS-2495 | 46d | 0d | 82,068.35 | GEN |
| C-ELV-CS-2475 |  | Installation & Connection of Wireless Access points & IP dect phone & RJ 45 at level 49 | 8d | 2016-06-29 | 2016-07-11 | C-ELV-CS-2465 | 46d | 22d | 93,342.54 | GEN |
| C-ELV-CS-2485 |  | Installtion & Connection of Controller & Instrumentation at level 49 | 20d | 2016-08-07 | 2016-08-29 | C-ELV-CS-2475, C-ELV-CS-2385 SS | 153d | 0d | 223,314.69 |  |

Notes:
- C-ELV-FA-2455: Expenses: 1 13660.9
- C-ELV-FA-2495: Expenses: 1 2769.38
- C-ELV-FA-2465: Expenses: 1 22768.2
- C-ELV-FA-2475: Expenses: 1 27321.8
- C-ELV-FA-2485: Expenses: 1 27321.8
- C-ELV-MSPA-2455: Expenses: 1 6994.34
- C-ELV-MSPA-2495: Expenses: 1 2769.38
- C-ELV-MSPA-2465: Expenses: 1 6994.34
- C-ELV-MSPA-2475: Expenses: 1 16320.1
- C-ELV-MSPA-2485: Expenses: 1 16320.1
- C-ELV-CCTV-2455: Expenses: 1 8161.35
- C-ELV-CCTV-2495: Expenses: 1 2769.38
- C-ELV-CCTV-2465: Expenses: 1 19043.1
- C-ELV-CCTV-2475: Expenses: 1 183699
- C-ELV-CCTV-2485: Expenses: 1 7322.52
- C-ELV-CS-2455: Expenses: 1 27356.1
- C-ELV-CS-2495: Expenses: 1 2769.38
- C-ELV-CS-2465: Expenses: 1 82068.4
- C-ELV-CS-2475: Expenses: 1 93342.5
- C-ELV-CS-2485: Expenses: 1 223315

| ID | WBS | Activity | Duration | Start | Finish | Predecessors | Total float | Free float | Cost | AREA |
| --- | --- | --- | --- | --- | --- | --- | --- | --- | --- | --- |
|  | 4 | **IP, SMATV & QAM Television System** |  | 2016-04-28 | 2016-09-03 |  |  |  |  |  |
| C-ELV-SMATV-2455 |  | Installation of SMATV first Fix Conduits, Boxes within block work , Gypsum Boards & Raised FLooring at level 49 | 20d | 2016-04-28 | 2016-05-21 | C-F-P-1483, C-F-P-1473, SD-CS-L49-1472, C-ELV-SMATV-2355 SS | 40d | 0d | 4,452.18 | GEN |
| C-ELV-SMATV-2495 |  | Installation of Cable Trays & Truncking at level 49 | 25d | 2016-05-31 | 2016-06-28 | C-ELV-CCTV-2495 SS+5d | 18d | 0d | 2,769.38 |  |
| C-ELV-SMATV-2465 |  | Installation of second fix (Cabling & Wirring etc..) at level 49 | 16d | 2016-06-29 | 2016-07-20 | C-ELV-SMATV-2455, C-ELV-SMATV-2495 | 20d | 0d | 10,388.41 | GEN |
| C-ELV-SMATV-2475 |  | Installation & Connection of Outlets, switches and splitter at level 49 | 18d | 2016-07-21 | 2016-08-10 | C-ELV-SMATV-2465 | 20d | 0d | 6,537.45 | GEN |
| C-ELV-SMATV-2485 |  | Installtion & Connection of SMATV & QAM fiber & receiver at level 49 | 20d | 2016-08-11 | 2016-09-03 | C-ELV-SMATV-2475, C-ELV-SMATV-2385 SS | 129d | 8d | 2,419.21 |  |
|  | 5 | **BMS system** |  | 2016-04-28 | 2016-09-05 |  |  |  |  |  |
| C-MEP-BMS-2455 |  | Installation of BMS first Fix Conduits, Boxes within block work , Gypsum Boards & Raised FLooring at level 49 | 20d | 2016-04-28 | 2016-05-21 | C-F-P-1483, C-F-P-1473, SD-CS-L49-1352, C-MEP-BMS-2355 SS | 51d | 0d | 8,895.95 | GEN |
| C-MEP-BMS-2495 |  | Installation of Cable trays & Trunking at level 49 | 20d | 2016-06-06 | 2016-06-28 | C-ELV-SMATV-2495 SS+5d | 18d | 0d |  |  |
| C-MEP-BMS-2465 |  | Installation of BMS Cabling & Wirring at level 49 | 16d | 2016-06-29 | 2016-07-20 | C-MEP-BMS-2455, C-MEP-BMS-2495 | 18d | 0d | 11,861.27 | GEN |
| C-MEP-BMS-2475 |  | Installation & Connection of BMS Sensors, Relays, & Valves at level 49 | 20d | 2016-07-21 | 2016-08-13 | C-MEP-BMS-2465, C-MEP-PD-2485, C-MEP-PD-2475, C-MEP-FF-1974, C-MEP-AC-3988, C-MEP-AC-3968, C-MEP-AC-3978 | 18d | 0d | 14,826.58 | GEN |
| C-MEP-BMS-2485 |  | Installtion & Connection of BMS Racks, Panels etc... at level 49 | 20d | 2016-08-14 | 2016-09-05 | C-MEP-BMS-2475, C-MEP-BMS-2385 SS | 137d | 8d | 14,826.58 |  |
|  | 29 | **MEP - Level 50** |  | 2016-04-06 | 2017-02-06 |  |  |  |  |  |
|  | 1 | **Electrical** |  | 2016-04-23 | 2017-02-04 |  |  |  |  |  |
| C-MEP-E-3066 |  | Installation of first Electrical Fix Conduits, Boxes within block work & Gypsum Boards at level 50 | 20d | 2016-04-23 | 2016-05-15 | C-F-P-1533, C-MEP-E-2646 | 77d | 11d | 55,235.7 | GEN |
| C-MEP-E-3116 |  | Installation of Cable Trays & Truncking at level 50 | 25d | 2016-05-11 | 2016-06-08 | C-MEP-FF-2044 SS+10d, C-MEP-PD-2555 SS+5d, C-MEP-E-2696 | 13d | 0d | 21,017.55 |  |
| C-MEP-E-3076 |  | Installation of Electrical Second Fix (Cabling & Wirring etc..). at level 50 | 18d | 2016-06-09 | 2016-06-29 | C-MEP-E-3066, C-MEP-E-3116, C-MEP-E-2656 | 56d | 0d | 190,528.33 | GEN |
| C-MEP-E-3086 |  | Installation & Connection of Electrical DB's, SMDB's & MCC's at level 50 | 16d | 2016-06-30 | 2016-07-21 | C-MEP-E-3076, C-MEP-E-2906 | 159d | 0d | 125,021.74 | GEN |
| C-MEP-E-3106 |  | Installation & Connection of Lighting Fixtures & Sockets at level 50 | 14d | 2017-01-19 | 2017-02-04 | C-MEP-E-3076, C-F-CF-3607, C-F-CF-3597, C-F-WF-2054, C-F-WF-2064, C-MEP-E-2806, C-F-P-LSF-792 FF | 71d | 53d | 71,857.69 | GEN |
|  | 2 | **HVAC** |  | 2016-04-06 | 2017-01-18 |  |  |  |  |  |
| C-MEP-AC-4088 |  | Installation of Ductwork, Insulation & Dampers at level 50 | 23d | 2016-04-06 | 2016-05-02 | C-F-P-1533 SS, C-MEP-AC-3688, SD-CS-L50-1172 | 23d | 0d | 82,961.13 | GEN |
| C-MEP-AC-4108 |  | Installation of Chilled Water Pipes & Valves at level 50 | 25d | 2016-04-18 | 2016-05-16 | C-MEP-AC-4088 SS+10d, C-MEP-AC-3308 | 62d | 0d | 30,741.92 | GEN |
| C-MEP-AC-4148 |  | Installation of HVAC equipments AHU's, FCU's, ERU's, VAV's, CAV's & Fans at level 50 | 25d | 2016-05-02 | 2016-05-30 | C-MEP-AC-4138 FF, C-MEP-AC-4128 FF, C-MEP-AC-4088 SS | 62d | 49d | 121,743.69 | GEN |
| C-MEP-AC-4138 |  | Pressure testing of Ductwork at level 50 | 8d | 2016-05-11 | 2016-05-19 | C-MEP-AC-4088, C-MEP-AC-3978 SS | 71d | 0d |  | GEN |
| C-MEP-AC-4128 |  | Pressure testing & Insulation of Chilled Water Pipes at level 50 | 12d | 2016-05-17 | 2016-05-30 | C-MEP-AC-4108 | 62d | 0d | 8,821.1 | GEN |
| C-MEP-AC-4098 |  | Installation of Silencers, Attenuators, Isolators & Detectors at level 50 | 12d | 2016-05-21 | 2016-06-02 | C-MEP-AC-4138 | 79d | 66d | 11,510.55 | GEN |
| C-MEP-AC-4118 |  | Installation of Chilled Water Pipes Control Devices & Isolator at level 50 | 8d | 2016-05-31 | 2016-06-08 | C-MEP-AC-4128 | 74d | 61d | 2,889.38 | GEN |
| C-MEP-AC-4158 |  | Installation of Grilles, Diffusers & Controller at level 50 | 12d | 2017-01-05 | 2017-01-18 | C-MEP-AC-4148, C-F-CF-3607, C-F-CF-3597, C-F-WF-2064 FF, C-F-CF-3597 FF, C-F-WF-2054 FF, C-MEP-AC-3758 | 47d | 32d | 24,067.89 | GEN |

Notes:
- C-ELV-SMATV-2455: Expenses: 1 4452.18
- C-ELV-SMATV-2495: Expenses: 1 2769.38
- C-ELV-SMATV-2465: Expenses: 1 10388.4
- C-ELV-SMATV-2475: Expenses: 1 6537.45
- C-ELV-SMATV-2485: Expenses: 1 2419.21
- C-MEP-BMS-2455: Expenses: 1 8895.95
- C-MEP-BMS-2465: Expenses: 1 11861.3
- C-MEP-BMS-2475: Expenses: 1 14826.6
- C-MEP-BMS-2485: Expenses: 1 14826.6
- C-MEP-E-3066: Expenses: 1 55235.7
- C-MEP-E-3116: Expenses: 1 21017.5
- C-MEP-E-3076: Expenses: 1 57962.7; 2 132566
- C-MEP-E-3086: Expenses: 1 78921.1; 2 46100.6
- C-MEP-E-3106: Expenses: 1 71857.7
- C-MEP-AC-4088: Expenses: 1 82961.1
- C-MEP-AC-4108: Expenses: 1 30741.9
- C-MEP-AC-4148: Expenses: 1 121744
- C-MEP-AC-4128: Expenses: 1 8821.1
- C-MEP-AC-4098: Expenses: 1 11510.5
- C-MEP-AC-4118: Expenses: 1 2889.38
- C-MEP-AC-4158: Expenses: 1 24067.9

| ID | WBS | Activity | Duration | Start | Finish | Predecessors | Total float | Free float | Cost | AREA |
| --- | --- | --- | --- | --- | --- | --- | --- | --- | --- | --- |
|  | 3 | **Fire Fighting** |  | 2016-04-18 | 2016-10-11 |  |  |  |  |  |
| C-MEP-FF-2044 |  | Installation of FIre fighting Pipes at level 50 | 25d | 2016-04-18 | 2016-05-16 | C-MEP-AC-4088 SS+10d, SD-CS-L50-1192 | 23d | 0d | 45,406.88 | GEN |
| C-MEP-FF-2064 |  | Pressure testing of fire fighting pipes at level 50 | 8d | 2016-05-17 | 2016-05-25 | C-MEP-FF-2044 | 46d | 0d | 5,280.67 | GEN |
| C-MEP-FF-2054 |  | Installation of fire Fighting Valves at level 50 | 20d | 2016-05-26 | 2016-06-18 | C-MEP-FF-2064 | 46d | 33d | 18,427.34 | GEN |
| C-MEP-FF-2074 |  | Installation of Fire Fighting Sprinklers & Fire hose Cabinets & Extinguishers at level 50 | 14d | 2016-09-26 | 2016-10-11 | C-MEP-FF-2054, C-F-CF-3597, C-F-CF-3587, C-MEP-FF-2064 | 57d | 0d | 64,097.37 | GEN |
|  | 4 | **Plumbing & Drainage** |  | 2016-05-05 | 2017-01-12 |  |  |  |  |  |
| C-MEP-PD-2555 |  | Installation of Water Pipes & Valves (Hot & Cold atc..) at level 50 | 20d | 2016-05-05 | 2016-05-28 | C-MEP-FF-2044 SS, C-F-P-1543, SD-CS-L50-1232 | 13d | 0d | 83,874.06 | GEN |
| C-MEP-PD-2565 |  | Installation drainage Pipes at level 50 | 25d | 2016-05-05 | 2016-06-02 | C-MEP-PD-2555 SS | 51d | 0d | 30,204.4 | GEN |
| C-MEP-PD-2575 |  | Pressure testing & Insullation of water pipes at level 50 | 8d | 2016-05-29 | 2016-06-06 | C-MEP-PD-2555 | 56d | 43d | 9,573.63 | GEN |
| C-MEP-PD-2585 |  | Pressure testing of drainage pipes at level 50 | 8d | 2016-06-04 | 2016-06-12 | C-MEP-PD-2565 | 51d | 38d | 1,651.42 | GEN |
| C-MEP-PD-2595 |  | Installation of Outlets, Drains, Gullies, Cowls, & Clean out at level 50 | 20d | 2016-12-21 | 2017-01-12 | C-MEP-PD-2575, C-MEP-PD-2575 FF, C-F-FF-2054, C-F-WF-2054, C-F-FF-2054 FF, C-F-WF-2074, C-F-WF-2054 FF, C-F-DW-2054, C-MEP-PD-2545, C-F-P-LSF-792 FF | 82d | 67d | 13,120.28 | GEN |
|  | 7 | **ELV systems** |  | 2016-05-05 | 2016-09-17 |  |  |  |  |  |
|  | 1 | **Room Management System** |  | 2016-05-05 | 2016-09-07 |  |  |  |  |  |
| C-ELV-RMS-2555 |  | Installation of RMS first fix (Conduits, Boxes within block work , Gypsum Boards & Raised FLooring at level 50 | 20d | 2016-05-05 | 2016-05-28 | C-F-P-1543, C-F-P-1533, SD-CS-L50-1412, C-ELV-RMS-2455 SS | 18d | 0d | 11,902.78 | GEN |
| C-ELV-RMS-2595 |  | Installation of Cable Trays & Truncking at level 50 | 25d | 2016-05-17 | 2016-06-14 | C-ELV-CS-2595 SS+5d | 13d | 0d | 2,769.38 |  |
| C-ELV-RMS-2565 |  | Installation of second fix (Cabling & Wirring etc..) at level 50 | 25d | 2016-06-15 | 2016-07-17 | C-ELV-RMS-2555, C-ELV-RMS-2595 | 19d | 0d | 11,902.78 | GEN |
| C-ELV-RMS-2575 |  | Installation & Connection of ethernets & HVAC thermostates etc.. at level 50 | 25d | 2016-07-18 | 2016-08-15 | C-ELV-RMS-2565 | 19d | 0d | 27,773.16 | GEN |
| C-ELV-RMS-2585 |  | Installtion & Connection of Panels, Controller, switches, server etc..) at level 50 | 20d | 2016-08-16 | 2016-09-07 | C-ELV-RMS-2575, C-ELV-RMS-2485 SS | 125d | 0d | 27,773.16 |  |
|  | 12 | **Fire Alarm & Detection System** |  | 2016-05-05 | 2016-09-17 |  |  |  |  |  |
| C-ELV-FA-2555 |  | Installation of FA first Fix Conduits, Boxes within block work , Gypsum Boards & Raised FLooring at level 50 | 20d | 2016-05-05 | 2016-05-28 | C-F-P-1543, C-F-P-1533, C-ELV-FA-2455 SS | 23d | 0d | 13,660.92 | GEN |
| C-ELV-FA-2595 |  | Installation of Cable Trays & Truncking at level 50 | 25d | 2016-05-29 | 2016-06-26 | C-ELV-MSPA-2595 SS+5d, SD-CS-L50-1452 | 13d | 0d | 2,769.38 |  |
| C-ELV-FA-2565 |  | Installation of second fix (Cabling & Wirring etc..) at level 50 | 20d | 2016-06-27 | 2016-07-23 | C-ELV-FA-2555, C-ELV-FA-2595 | 14d | 0d | 22,768.2 | GEN |
| C-ELV-FA-2575 |  | Installation & Connection of heat detector, smoke detector, flame detector etc.. at level 50 | 25d | 2016-07-24 | 2016-08-21 | C-ELV-FA-2565 | 14d | 0d | 27,321.84 | GEN |
| C-ELV-FA-2585 |  | Installtion & Connection of Racks & Panels at level 50 | 20d | 2016-08-22 | 2016-09-17 | C-ELV-FA-2575, C-ELV-FA-2485 SS | 120d | 0d | 27,321.84 |  |

Notes:
- C-MEP-FF-2044: Expenses: 1 45406.9
- C-MEP-FF-2064: Expenses: 1 5280.67
- C-MEP-FF-2054: Expenses: 1 18427.3
- C-MEP-FF-2074: Expenses: 1 64097.4
- C-MEP-PD-2555: Expenses: 1 83874.1
- C-MEP-PD-2565: Expenses: 1 30204.4
- C-MEP-PD-2575: Expenses: 1 9573.63
- C-MEP-PD-2585: Expenses: 1 1651.42
- C-MEP-PD-2595: Expenses: 1 13120.3
- C-ELV-RMS-2555: Expenses: 1 11902.8
- C-ELV-RMS-2595: Expenses: 1 2769.38
- C-ELV-RMS-2565: Expenses: 1 11902.8
- C-ELV-RMS-2575: Expenses: 1 27773.2
- C-ELV-RMS-2585: Expenses: 1 27773.2
- C-ELV-FA-2555: Expenses: 1 13660.9
- C-ELV-FA-2595: Expenses: 1 2769.38
- C-ELV-FA-2565: Expenses: 1 22768.2
- C-ELV-FA-2575: Expenses: 1 27321.8
- C-ELV-FA-2585: Expenses: 1 27321.8

| ID | WBS | Activity | Duration | Start | Finish | Predecessors | Total float | Free float | Cost | AREA |
| --- | --- | --- | --- | --- | --- | --- | --- | --- | --- | --- |
|  | 2 | **Music System & Public Address System** |  | 2016-05-05 | 2016-09-17 |  |  |  |  |  |
| C-ELV-MSPA-2555 |  | Installation of MS/PA first fix (Conduits, Boxes within block work, Gypsum Boards & Raised FLooring at level 50 | 20d | 2016-05-05 | 2016-05-28 | C-F-P-1543, C-F-P-1533, SD-CS-L50-1432, C-ELV-MSPA-2455 SS | 34d | 0d | 6,994.34 | GEN |
| C-ELV-MSPA-2595 |  | Installation of Cable Trays & Truncking at level 50 | 25d | 2016-05-23 | 2016-06-20 | C-ELV-RMS-2595 SS+5d | 13d | 0d | 2,769.38 |  |
| C-ELV-MSPA-2565 |  | Installation of second fix (Cabling & Wirring etc..) at level 50 | 25d | 2016-06-21 | 2016-07-23 | C-ELV-MSPA-2555, C-ELV-MSPA-2595 | 14d | 0d | 6,994.34 | GEN |
| C-ELV-MSPA-2575 |  | Installation & Connection of speakers, Amplifier & Controller at level 50 | 25d | 2016-07-24 | 2016-08-21 | C-ELV-MSPA-2565 | 14d | 0d | 16,320.12 | GEN |
| C-ELV-MSPA-2585 |  | Installtion & Connection of Media hub, panels and processor at level 50 | 20d | 2016-08-22 | 2016-09-17 | C-ELV-MSPA-2575, C-ELV-MSPA-2485 SS | 120d | 0d | 16,320.12 |  |
|  | 3 | **IP CCTV & Access Control System** |  | 2016-05-05 | 2016-09-04 |  |  |  |  |  |
| C-ELV-CCTV-2555 |  | Installation of CCTV first Fix Conduits, Boxes within block work, Gypsum Boards & Raised FLooring at level 50 | 20d | 2016-05-05 | 2016-05-28 | C-F-P-1543, C-F-P-1533, SD-CS-L50-1472, C-ELV-CCTV-2455 SS | 30d | 0d | 8,161.35 | GEN |
| C-ELV-CCTV-2595 |  | Installation of Cable Trays & Truncking at level 50 | 25d | 2016-06-04 | 2016-07-02 | C-ELV-FA-2595 SS+5d | 13d | 0d | 2,769.38 |  |
| C-ELV-CCTV-2565 |  | Installation of second fix (Cabling & Wirring etc..) at level 50 | 20d | 2016-07-03 | 2016-07-28 | C-ELV-CCTV-2555, C-ELV-CCTV-2595 | 16d | 0d | 19,043.14 | GEN |
| C-ELV-CCTV-2575 |  | Installation & Connection of Camera's & Alarms at level 50 | 18d | 2016-07-30 | 2016-08-18 | C-ELV-CCTV-2565 | 16d | 3d | 183,698.91 | GEN |
| C-ELV-CCTV-2585 |  | Installtion & Connection of Racks, Panels etc... at level 50 | 25d | 2016-08-07 | 2016-09-04 | C-ELV-CCTV-2575 FF, C-ELV-CCTV-2485 SS | 123d | 0d | 7,322.52 |  |
|  | 7 | **Communication System** |  | 2016-05-05 | 2016-08-29 |  |  |  |  |  |
| C-ELV-CS-2555 |  | Installation of CS first fix (Conduits, Boxes within block work, Gypsum Boards & Raised FLooring at level 50 | 20d | 2016-05-05 | 2016-05-28 | C-F-P-1543, C-F-P-1533, SD-CS-L50-1392, C-ELV-CS-2455 SS | 51d | 0d | 27,356.12 | GEN |
| C-ELV-CS-2595 |  | Installation of Cable Trays & Truncking at level 50 | 25d | 2016-05-11 | 2016-06-08 | C-MEP-E-3116 SS | 13d | 0d | 2,769.38 |  |
| C-ELV-CS-2565 |  | Installation of second fix (Cabling & Wirring etc..) at level 50 | 25d | 2016-06-09 | 2016-07-11 | C-ELV-CS-2555, C-ELV-CS-2595 | 41d | 0d | 82,068.35 | GEN |
| C-ELV-CS-2575 |  | Installation & Connection of Wireless Access points & IP dect phone & RJ 45 at level 50 | 8d | 2016-07-12 | 2016-07-20 | C-ELV-CS-2565 | 41d | 14d | 93,342.54 | GEN |
| C-ELV-CS-2585 |  | Installtion & Connection of Controller & Instrumentation at level 50 | 20d | 2016-08-07 | 2016-08-29 | C-ELV-CS-2575, C-ELV-CS-2485 SS | 153d | 0d | 223,314.69 |  |
|  | 4 | **IP, SMATV & QAM Television System** |  | 2016-05-05 | 2016-09-15 |  |  |  |  |  |
| C-ELV-SMATV-2555 |  | Installation of SMATV first Fix Conduits, Boxes within block work , Gypsum Boards & Raised FLooring at level 50 | 20d | 2016-05-05 | 2016-05-28 | C-F-P-1543, C-F-P-1533, SD-CS-L50-1492, C-ELV-SMATV-2455 SS | 34d | 0d | 4,452.18 | GEN |
| C-ELV-SMATV-2595 |  | Installation of Cable Trays & Truncking at level 50 | 25d | 2016-06-09 | 2016-07-11 | C-ELV-CCTV-2595 SS+5d | 13d | 0d | 2,769.38 |  |
| C-ELV-SMATV-2565 |  | Installation of second fix (Cabling & Wirring etc..) at level 50 | 16d | 2016-07-12 | 2016-07-30 | C-ELV-SMATV-2555, C-ELV-SMATV-2595 | 15d | 0d | 10,388.41 | GEN |
| C-ELV-SMATV-2575 |  | Installation & Connection of Outlets, switches and splitter at level 50 | 18d | 2016-07-31 | 2016-08-20 | C-ELV-SMATV-2565 | 15d | 0d | 6,537.45 | GEN |
| C-ELV-SMATV-2585 |  | Installtion & Connection of SMATV & QAM fiber & receiver at level 50 | 20d | 2016-08-21 | 2016-09-15 | C-ELV-SMATV-2575, C-ELV-SMATV-2485 SS | 121d | 0d | 2,419.21 |  |

Notes:
- C-ELV-MSPA-2555: Expenses: 1 6994.34
- C-ELV-MSPA-2595: Expenses: 1 2769.38
- C-ELV-MSPA-2565: Expenses: 1 6994.34
- C-ELV-MSPA-2575: Expenses: 1 16320.1
- C-ELV-MSPA-2585: Expenses: 1 16320.1
- C-ELV-CCTV-2555: Expenses: 1 8161.35
- C-ELV-CCTV-2595: Expenses: 1 2769.38
- C-ELV-CCTV-2565: Expenses: 1 19043.1
- C-ELV-CCTV-2575: Expenses: 1 183699
- C-ELV-CCTV-2585: Expenses: 1 7322.52
- C-ELV-CS-2555: Expenses: 1 27356.1
- C-ELV-CS-2595: Expenses: 1 2769.38
- C-ELV-CS-2565: Expenses: 1 82068.4
- C-ELV-CS-2575: Expenses: 1 93342.5
- C-ELV-CS-2585: Expenses: 1 223315
- C-ELV-SMATV-2555: Expenses: 1 4452.18
- C-ELV-SMATV-2595: Expenses: 1 2769.38
- C-ELV-SMATV-2565: Expenses: 1 10388.4
- C-ELV-SMATV-2575: Expenses: 1 6537.45
- C-ELV-SMATV-2585: Expenses: 1 2419.21

| ID | WBS | Activity | Duration | Start | Finish | Predecessors | Total float | Free float | Cost | AREA |
| --- | --- | --- | --- | --- | --- | --- | --- | --- | --- | --- |
|  | 5 | **BMS system** |  | 2016-05-05 | 2016-09-18 |  |  |  |  |  |
| C-MEP-BMS-2555 |  | Installation of BMS first Fix Conduits, Boxes within block work , Gypsum Boards & Raised FLooring at level 50 | 20d | 2016-05-05 | 2016-05-28 | C-F-P-1543, C-F-P-1533, SD-CS-L50-1372, C-MEP-BMS-2455 SS | 48d | 0d | 8,895.95 | GEN |
| C-MEP-BMS-2595 |  | Installation of Cable trays & Trunking at level 50 | 20d | 2016-06-15 | 2016-07-11 | C-ELV-SMATV-2595 SS+5d | 13d | 0d |  |  |
| C-MEP-BMS-2565 |  | Installation of BMS Cabling & Wirring at level 50 | 16d | 2016-07-12 | 2016-07-30 | C-MEP-BMS-2555, C-MEP-BMS-2595 | 13d | 0d | 11,861.27 | GEN |
| C-MEP-BMS-2575 |  | Installation & Connection of BMS Sensors, Relays, & Valves at level 50 | 20d | 2016-07-31 | 2016-08-22 | C-MEP-BMS-2565, C-MEP-PD-2585, C-MEP-PD-2575, C-MEP-FF-2054, C-MEP-AC-4148, C-MEP-AC-4128, C-MEP-AC-4138 | 13d | 0d | 14,826.58 | GEN |
| C-MEP-BMS-2585 |  | Installtion & Connection of BMS Racks, Panels etc... at level 50 | 20d | 2016-08-23 | 2016-09-18 | C-MEP-BMS-2575, C-MEP-BMS-2485 SS | 129d | 0d | 14,826.58 |  |
|  | 6 | **Gas System** |  | 2016-12-22 | 2017-02-06 |  |  |  |  |  |
| C-MEP-Gas-2995 |  | Installation & testing of Gas Pipes & Supports at level 50 | 20d | 2016-12-22 | 2017-01-14 | C-MEP-PD-2585, C-MEP-PD-2575, C-MEP-FF-2064, C-MEP-Gas-2965 SS | 6d | 0d | 4,994.14 | GEN |
| C-MEP-Gas-3005 |  | Installation & testing of Gas Valves at level 50 | 20d | 2017-01-15 | 2017-02-06 | C-MEP-Gas-2995 | 6d | 0d | 3,329.43 |  |
|  | 53 | **MEP - Level 51** |  | 2016-04-06 | 2017-03-02 |  |  |  |  |  |
|  | 1 | **Electrical** |  | 2016-04-14 | 2017-02-02 |  |  |  |  |  |
| C-MEP-E-3126 |  | Installation of first Electrical Fix Conduits, Boxes within block work & Gypsum Boards at level 51 | 20d | 2016-04-14 | 2016-05-07 | C-F-P-1563, C-MEP-E-3006 | 16d | 1d | 55,235.7 | GEN |
| C-MEP-E-3176 |  | Installation of Cable Trays & Truncking at level 51 | 18d | 2016-04-18 | 2016-05-08 | C-MEP-FF-2084 SS+5d, C-MEP-PD-2605 SS+5d, C-MEP-E-3056 | 15d | 0d | 21,017.55 |  |
| C-MEP-E-3136 |  | Installation of Electrical Second Fix (Cabling & Wirring etc..). at level 51 | 18d | 2016-05-09 | 2016-05-29 | C-MEP-E-3126, C-MEP-E-3176, C-MEP-E-3016 | 15d | 10d | 190,528.33 | GEN |
| C-MEP-E-3146 |  | Installation & Connection of Electrical DB's, SMDB's & MCC's at level 51 | 16d | 2016-06-11 | 2016-06-28 | C-MEP-E-3136, C-E-SR-B3G-263, C-MEP-E-2606 SS | 5d | 0d | 125,021.74 | GEN |
| C-MEP-E-3166 |  | Installation & Connection of Lighting Fixtures & Sockets at level 51 | 14d | 2017-01-18 | 2017-02-02 | C-MEP-E-3136, C-F-CF-3677, C-F-CF-3667, C-F-WF-2094, C-F-WF-2104, C-MEP-E-2746, C-F-P-LSF-802 FF | 72d | 54d | 71,857.69 | GEN |
|  | 2 | **HVAC** |  | 2016-04-06 | 2017-01-17 |  |  |  |  |  |
| C-MEP-AC-4168 |  | Installation of Ductwork, Insulation & Dampers at level 51 | 23d | 2016-04-06 | 2016-05-02 | C-F-P-1563 SS, C-MEP-AC-3608, SD-CS-L51-1452 | 15d | 0d | 82,961.13 | GEN |
| C-MEP-AC-4188 |  | Installation of Chilled Water Pipes & Valves at level 51 | 25d | 2016-04-18 | 2016-05-16 | C-MEP-AC-4168 SS+10d, C-MEP-AC-3548 | 66d | 0d | 30,741.92 | GEN |
| C-MEP-AC-4228 |  | Installation of HVAC equipments AHU's, FCU's, ERU's, VAV's, CAV's & Fans at level 51 | 25d | 2016-05-02 | 2016-05-30 | C-MEP-AC-4218 FF, C-MEP-AC-4208 FF, C-MEP-AC-4168 SS | 66d | 29d | 95,203.79 | GEN |
| C-MEP-AC-4218 |  | Pressure testing of Ductwork at level 51 | 8d | 2016-05-11 | 2016-05-19 | C-MEP-AC-4168, C-MEP-AC-4138 SS | 75d | 0d |  | GEN |
| C-MEP-AC-4208 |  | Pressure testing & Insulation of Chilled Water Pipes at level 51 | 12d | 2016-05-17 | 2016-05-30 | C-MEP-AC-4188 | 66d | 0d | 8,821.1 | GEN |
| C-MEP-AC-4178 |  | Installation of Silencers, Attenuators, Isolators & Detectors at level 51 | 12d | 2016-05-21 | 2016-06-02 | C-MEP-AC-4218 | 83d | 65d | 11,510.55 | GEN |
| C-MEP-AC-4198 |  | Installation of Chilled Water Pipes Control Devices & Isolator at level 51 | 8d | 2016-05-31 | 2016-06-08 | C-MEP-AC-4208 | 78d | 60d | 2,889.38 | GEN |
| C-MEP-AC-4238 |  | Installation of Grilles, Diffusers & Controller at level 51 | 12d | 2017-01-04 | 2017-01-17 | C-MEP-AC-4228, C-F-CF-3677, C-F-CF-3667, C-F-WF-2104 FF, C-F-CF-3667 FF, C-F-WF-2094 FF, C-MEP-AC-3678 | 48d | 33d | 22,749.1 | GEN |

Notes:
- C-MEP-BMS-2555: Expenses: 1 8895.95
- C-MEP-BMS-2565: Expenses: 1 11861.3
- C-MEP-BMS-2575: Expenses: 1 14826.6
- C-MEP-BMS-2585: Expenses: 1 14826.6
- C-MEP-Gas-2995: Expenses: 1 4994.14
- C-MEP-Gas-3005: Expenses: 1 3329.43
- C-MEP-E-3126: Expenses: 1 55235.7
- C-MEP-E-3176: Expenses: 1 21017.5
- C-MEP-E-3136: Expenses: 1 57962.7; 2 132566
- C-MEP-E-3146: Expenses: 1 78921.1; 2 46100.6
- C-MEP-E-3166: Expenses: 1 71857.7
- C-MEP-AC-4168: Expenses: 1 82961.1
- C-MEP-AC-4188: Expenses: 1 30741.9
- C-MEP-AC-4228: Expenses: 1 95203.8
- C-MEP-AC-4208: Expenses: 1 8821.1
- C-MEP-AC-4178: Expenses: 1 11510.5
- C-MEP-AC-4198: Expenses: 1 2889.38
- C-MEP-AC-4238: Expenses: 1 22749.1

| ID | WBS | Activity | Duration | Start | Finish | Predecessors | Total float | Free float | Cost | AREA |
| --- | --- | --- | --- | --- | --- | --- | --- | --- | --- | --- |
|  | 3 | **Fire Fighting** |  | 2016-04-12 | 2016-10-10 |  |  |  |  |  |
| C-MEP-FF-2084 |  | Installation of FIre fighting Pipes at level 51 | 25d | 2016-04-12 | 2016-05-10 | C-MEP-AC-4168 SS+5d, SD-CS-L51-1512 | 15d | 0d | 45,406.88 | GEN |
| C-MEP-FF-2104 |  | Pressure testing of fire fighting pipes at level 51 | 8d | 2016-05-11 | 2016-05-19 | C-MEP-FF-2084 | 55d | 0d | 5,280.67 | GEN |
| C-MEP-FF-2094 |  | Installation of fire Fighting Valves at level 51 | 20d | 2016-05-21 | 2016-06-12 | C-MEP-FF-2104 | 55d | 18d | 18,427.34 | GEN |
| C-MEP-FF-2114 |  | Installation of Fire Fighting Sprinklers & Fire hose Cabinets & Extinguishers at level 51 | 14d | 2016-09-25 | 2016-10-10 | C-MEP-FF-2094, C-F-CF-3667, C-F-CF-3657, C-MEP-FF-2104 | 58d | 0d | 64,097.37 | GEN |
|  | 4 | **Plumbing & Drainage** |  | 2016-04-12 | 2017-01-11 |  |  |  |  |  |
| C-MEP-PD-2605 |  | Installation of Water Pipes & Valves (Hot & Cold atc..) at level 51 | 20d | 2016-04-12 | 2016-05-04 | C-MEP-FF-2084 SS, C-F-P-1573 FF+18d, SD-CS-L51-1632 | 15d | 0d | 83,874.06 | GEN |
| C-MEP-PD-2615 |  | Installation drainage Pipes at level 51 | 25d | 2016-04-12 | 2016-05-10 | C-MEP-PD-2605 SS | 75d | 0d | 30,204.4 | GEN |
| C-MEP-PD-2625 |  | Pressure testing & Insullation of water pipes at level 51 | 8d | 2016-05-05 | 2016-05-14 | C-MEP-PD-2605 | 80d | 43d | 9,573.63 | GEN |
| C-MEP-PD-2635 |  | Pressure testing of drainage pipes at level 51 | 8d | 2016-05-11 | 2016-05-19 | C-MEP-PD-2615 | 75d | 38d | 1,651.42 | GEN |
| C-MEP-PD-2645 |  | Installation of Outlets, Drains, Gullies, Cowls, & Clean out at level 51 | 20d | 2016-12-20 | 2017-01-11 | C-MEP-PD-2625, C-MEP-PD-2625 FF, C-F-FF-2094, C-F-WF-2094, C-F-FF-2094 FF, C-F-WF-2114, C-F-WF-2094 FF, C-F-DW-2094, C-MEP-PD-2345, C-F-P-LSF-802 FF | 93d | 78d | 13,120.28 | GEN |
|  | 7 | **ELV systems** |  | 2016-04-18 | 2016-10-11 |  |  |  |  |  |
|  | 1 | **Room Management System** |  | 2016-04-24 | 2016-10-05 |  |  |  |  |  |
| C-ELV-RMS-2645 |  | Installation of Cable Trays & Truncking at level 51 | 25d | 2016-04-24 | 2016-05-22 | C-ELV-CS-2645 SS+5d | 37d | 0d | 2,769.38 |  |
| C-ELV-RMS-2605 |  | Installation of RMS first fix (Conduits, Boxes within block work , Gypsum Boards & Raised FLooring at level 51 | 20d | 2016-05-29 | 2016-06-20 | C-F-P-1573, C-F-P-1563, SD-CS-L51-2172, C-ELV-RMS-2555 | 18d | 0d | 11,902.78 | GEN |
| C-ELV-RMS-2615 |  | Installation of second fix (Cabling & Wirring etc..) at level 51 | 25d | 2016-06-21 | 2016-07-23 | C-ELV-RMS-2605, C-ELV-RMS-2645 | 18d | 0d | 11,902.78 | GEN |
| C-ELV-RMS-2625 |  | Installation & Connection of ethernets & HVAC thermostates etc.. at level 51 | 25d | 2016-07-24 | 2016-08-21 | C-ELV-RMS-2615 | 18d | 0d | 27,773.16 | GEN |
| C-ELV-RMS-2635 |  | Installtion & Connection of Panels, Controller, switches, server etc..) at level 51 | 20d | 2016-09-08 | 2016-10-05 | C-ELV-RMS-2625, C-ELV-RMS-2585 | 125d | 70d | 27,773.16 |  |
|  | 12 | **Fire Alarm & Detection System** |  | 2016-05-05 | 2016-10-11 |  |  |  |  |  |
| C-ELV-FA-2645 |  | Installation of Cable Trays & Truncking at level 51 | 25d | 2016-05-05 | 2016-06-02 | C-ELV-MSPA-2645 SS+5d, SD-CS-L51-2292 | 37d | 0d | 2,769.38 |  |
| C-ELV-FA-2605 |  | Installation of FA first Fix Conduits, Boxes within block work , Gypsum Boards & Raised FLooring at level 51 | 20d | 2016-05-29 | 2016-06-20 | C-F-P-1573, C-F-P-1563, C-ELV-FA-2555 | 23d | 0d | 13,660.92 | GEN |
| C-ELV-FA-2615 |  | Installation of second fix (Cabling & Wirring etc..) at level 51 | 20d | 2016-06-21 | 2016-07-17 | C-ELV-FA-2605, C-ELV-FA-2645 | 23d | 0d | 22,768.2 | GEN |
| C-ELV-FA-2625 |  | Installation & Connection of heat detector, smoke detector, flame detector etc.. at level 51 | 25d | 2016-07-18 | 2016-08-15 | C-ELV-FA-2615 | 23d | 5d | 27,321.84 | GEN |
| C-ELV-FA-2635 |  | Installtion & Connection of Racks & Panels at level 51 | 20d | 2016-09-18 | 2016-10-11 | C-ELV-FA-2625, C-ELV-FA-2585 | 120d | 65d | 27,321.84 |  |

Notes:
- C-MEP-FF-2084: Expenses: 1 45406.9
- C-MEP-FF-2104: Expenses: 1 5280.67
- C-MEP-FF-2094: Expenses: 1 18427.3
- C-MEP-FF-2114: Expenses: 1 64097.4
- C-MEP-PD-2605: Expenses: 1 83874.1
- C-MEP-PD-2615: Expenses: 1 30204.4
- C-MEP-PD-2625: Expenses: 1 9573.63
- C-MEP-PD-2635: Expenses: 1 1651.42
- C-MEP-PD-2645: Expenses: 1 13120.3
- C-ELV-RMS-2645: Expenses: 1 2769.38
- C-ELV-RMS-2605: Expenses: 1 11902.8
- C-ELV-RMS-2615: Expenses: 1 11902.8
- C-ELV-RMS-2625: Expenses: 1 27773.2
- C-ELV-RMS-2635: Expenses: 1 27773.2
- C-ELV-FA-2645: Expenses: 1 2769.38
- C-ELV-FA-2605: Expenses: 1 13660.9
- C-ELV-FA-2615: Expenses: 1 22768.2
- C-ELV-FA-2625: Expenses: 1 27321.8
- C-ELV-FA-2635: Expenses: 1 27321.8

| ID | WBS | Activity | Duration | Start | Finish | Predecessors | Total float | Free float | Cost | AREA |
| --- | --- | --- | --- | --- | --- | --- | --- | --- | --- | --- |
|  | 2 | **Music System & Public Address System** |  | 2016-04-30 | 2016-10-11 |  |  |  |  |  |
| C-ELV-MSPA-2645 |  | Installation of Cable Trays & Truncking at level 51 | 25d | 2016-04-30 | 2016-05-28 | C-ELV-RMS-2645 SS+5d | 37d | 0d | 2,769.38 |  |
| C-ELV-MSPA-2605 |  | Installation of MS/PA first fix (Conduits, Boxes within block work, Gypsum Boards & Raised FLooring at level 51 | 20d | 2016-05-05 | 2016-05-28 | C-F-P-1573, C-F-P-1563, SD-CS-L51-2232, C-ELV-MSPA-2555 SS | 38d | 0d | 6,994.34 | GEN |
| C-ELV-MSPA-2615 |  | Installation of second fix (Cabling & Wirring etc..) at level 51 | 25d | 2016-05-29 | 2016-06-26 | C-ELV-MSPA-2605, C-ELV-MSPA-2645 | 38d | 0d | 6,994.34 | GEN |
| C-ELV-MSPA-2625 |  | Installation & Connection of speakers, Amplifier & Controller at level 51 | 25d | 2016-06-27 | 2016-07-28 | C-ELV-MSPA-2615 | 38d | 20d | 16,320.12 | GEN |
| C-ELV-MSPA-2635 |  | Installtion & Connection of Media hub, panels and processor at level 51 | 20d | 2016-09-18 | 2016-10-11 | C-ELV-MSPA-2625, C-ELV-MSPA-2585 | 120d | 65d | 16,320.12 |  |
|  | 3 | **IP CCTV & Access Control System** |  | 2016-05-11 | 2016-10-08 |  |  |  |  |  |
| C-ELV-CCTV-2645 |  | Installation of Cable Trays & Truncking at level 51 | 25d | 2016-05-11 | 2016-06-08 | C-ELV-FA-2645 SS+5d | 37d | 0d | 2,769.38 |  |
| C-ELV-CCTV-2605 |  | Installation of CCTV first Fix Conduits, Boxes within block work, Gypsum Boards & Raised FLooring at level 51 | 20d | 2016-05-29 | 2016-06-20 | C-F-P-1573, C-F-P-1563, SD-CS-L51-2352, C-ELV-CCTV-2555 | 30d | 0d | 8,161.35 | GEN |
| C-ELV-CCTV-2615 |  | Installation of second fix (Cabling & Wirring etc..) at level 51 | 20d | 2016-06-21 | 2016-07-17 | C-ELV-CCTV-2605, C-ELV-CCTV-2645 | 30d | 0d | 19,043.14 | GEN |
| C-ELV-CCTV-2625 |  | Installation & Connection of Camera's & Alarms at level 51 | 18d | 2016-07-18 | 2016-08-07 | C-ELV-CCTV-2615 | 30d | 12d | 183,698.91 | GEN |
| C-ELV-CCTV-2635 |  | Installtion & Connection of Racks, Panels etc... at level 51 | 25d | 2016-09-05 | 2016-10-08 | C-ELV-CCTV-2625 FF, C-ELV-CCTV-2585 | 123d | 68d | 7,322.52 |  |
|  | 7 | **Communication System** |  | 2016-04-18 | 2016-08-29 |  |  |  |  |  |
| C-ELV-CS-2645 |  | Installation of Cable Trays & Truncking at level 51 | 25d | 2016-04-18 | 2016-05-16 | C-MEP-E-3176 SS | 37d | 0d | 2,769.38 |  |
| C-ELV-CS-2605 |  | Installation of CS first fix (Conduits, Boxes within block work, Gypsum Boards & Raised FLooring at level 51 | 20d | 2016-05-05 | 2016-05-28 | C-F-P-1573, C-F-P-1563, SD-CS-L51-2112, C-ELV-CS-2555 SS | 55d | 0d | 27,356.12 | GEN |
| C-ELV-CS-2615 |  | Installation of second fix (Cabling & Wirring etc..) at level 51 | 25d | 2016-05-29 | 2016-06-26 | C-ELV-CS-2605, C-ELV-CS-2645 | 55d | 0d | 82,068.35 | GEN |
| C-ELV-CS-2625 |  | Installation & Connection of Wireless Access points & IP dect phone & RJ 45 at level 51 | 8d | 2016-06-27 | 2016-07-09 | C-ELV-CS-2615 | 55d | 24d | 93,342.54 | GEN |
| C-ELV-CS-2635 |  | Installtion & Connection of Controller & Instrumentation at level 51 | 20d | 2016-08-07 | 2016-08-29 | C-ELV-CS-2625, C-ELV-CS-2585 SS | 153d | 98d | 223,314.69 |  |
|  | 4 | **IP, SMATV & QAM Television System** |  | 2016-05-17 | 2016-10-10 |  |  |  |  |  |
| C-ELV-SMATV-2645 |  | Installation of Cable Trays & Truncking at level 51 | 25d | 2016-05-17 | 2016-06-14 | C-ELV-CCTV-2645 SS+5d | 37d | 0d | 2,769.38 |  |
| C-ELV-SMATV-2605 |  | Installation of SMATV first Fix Conduits, Boxes within block work , Gypsum Boards & Raised FLooring at level 51 | 20d | 2016-05-29 | 2016-06-20 | C-F-P-1573, C-F-P-1563, SD-CS-L51-2412, C-ELV-SMATV-2555 | 34d | 0d | 4,452.18 | GEN |
| C-ELV-SMATV-2615 |  | Installation of second fix (Cabling & Wirring etc..) at level 51 | 16d | 2016-06-21 | 2016-07-12 | C-ELV-SMATV-2605, C-ELV-SMATV-2645 | 34d | 0d | 10,388.41 | GEN |
| C-ELV-SMATV-2625 |  | Installation & Connection of Outlets, switches and splitter at level 51 | 18d | 2016-07-13 | 2016-08-02 | C-ELV-SMATV-2615 | 34d | 16d | 6,537.45 | GEN |
| C-ELV-SMATV-2635 |  | Installtion & Connection of SMATV & QAM fiber & receiver at level 51 | 20d | 2016-09-17 | 2016-10-10 | C-ELV-SMATV-2625, C-ELV-SMATV-2585 | 121d | 66d | 2,419.21 |  |

Notes:
- C-ELV-MSPA-2645: Expenses: 1 2769.38
- C-ELV-MSPA-2605: Expenses: 1 6994.34
- C-ELV-MSPA-2615: Expenses: 1 6994.34
- C-ELV-MSPA-2625: Expenses: 1 16320.1
- C-ELV-MSPA-2635: Expenses: 1 16320.1
- C-ELV-CCTV-2645: Expenses: 1 2769.38
- C-ELV-CCTV-2605: Expenses: 1 8161.35
- C-ELV-CCTV-2615: Expenses: 1 19043.1
- C-ELV-CCTV-2625: Expenses: 1 183699
- C-ELV-CCTV-2635: Expenses: 1 7322.52
- C-ELV-CS-2645: Expenses: 1 2769.38
- C-ELV-CS-2605: Expenses: 1 27356.1
- C-ELV-CS-2615: Expenses: 1 82068.4
- C-ELV-CS-2625: Expenses: 1 93342.5
- C-ELV-CS-2635: Expenses: 1 223315
- C-ELV-SMATV-2645: Expenses: 1 2769.38
- C-ELV-SMATV-2605: Expenses: 1 4452.18
- C-ELV-SMATV-2615: Expenses: 1 10388.4
- C-ELV-SMATV-2625: Expenses: 1 6537.45
- C-ELV-SMATV-2635: Expenses: 1 2419.21

| ID | WBS | Activity | Duration | Start | Finish | Predecessors | Total float | Free float | Cost | AREA |
| --- | --- | --- | --- | --- | --- | --- | --- | --- | --- | --- |
|  | 5 | **BMS system** |  | 2016-05-05 | 2016-10-12 |  |  |  |  |  |
| C-MEP-BMS-2605 |  | Installation of BMS first Fix Conduits, Boxes within block work , Gypsum Boards & Raised FLooring at level 51 | 20d | 2016-05-05 | 2016-05-28 | C-F-P-1573, C-F-P-1563, SD-CS-L51-2052, C-MEP-BMS-2555 SS | 52d | 15d | 8,895.95 | GEN |
| C-MEP-BMS-2645 |  | Installation of Cable trays & Trunking at level 51 | 20d | 2016-05-23 | 2016-06-14 | C-ELV-SMATV-2645 SS+5d | 37d | 0d |  |  |
| C-MEP-BMS-2615 |  | Installation of BMS Cabling & Wirring at level 51 | 16d | 2016-06-15 | 2016-07-03 | C-MEP-BMS-2605, C-MEP-BMS-2645 | 37d | 0d | 11,861.27 | GEN |
| C-MEP-BMS-2625 |  | Installation & Connection of BMS Sensors, Relays, & Valves at level 51 | 20d | 2016-07-04 | 2016-07-30 | C-MEP-BMS-2615, C-MEP-PD-2635, C-MEP-PD-2625, C-MEP-FF-2094, C-MEP-AC-4228, C-MEP-AC-4208, C-MEP-AC-4218 | 37d | 19d | 14,826.58 | GEN |
| C-MEP-BMS-2635 |  | Installtion & Connection of BMS Racks, Panels etc... at level 51 | 20d | 2016-09-19 | 2016-10-12 | C-MEP-BMS-2625, C-MEP-BMS-2585 | 129d | 64d | 14,826.58 |  |
|  | 6 | **Gas System** |  | 2017-01-15 | 2017-03-02 |  |  |  |  |  |
| C-MEP-Gas-975 |  | Installation & testing of Gas Pipes & Supports at level 51 | 20d | 2017-01-15 | 2017-02-06 | C-MEP-PD-2635, C-MEP-PD-2625, C-MEP-FF-2104, C-MEP-Gas-3005 SS | 6d | 0d | 4,994.14 | GEN |
| C-MEP-Gas-2985 |  | Installation & testing of Gas Valves at level 51 | 20d | 2017-02-07 | 2017-03-02 | C-MEP-Gas-975 | 6d | 0d | 3,329.43 |  |
|  | 55 | **MEP - Lower Roof Level** |  | 2016-04-13 | 2017-01-18 |  |  |  |  |  |
|  | 1 | **Electrical** |  | 2016-04-21 | 2017-01-18 |  |  |  |  |  |
| C-MEP-E-3366 |  | Installation of first Electrical Fix Conduits, Boxes within block work & Gypsum Boards at LR level | 20d | 2016-04-21 | 2016-05-14 | C-F-P-3413 | 8d | 0d | 55,235.7 | GEN |
| C-MEP-E-3406 |  | Installation of Cable Trays & Truncking at LR level | 18d | 2016-04-25 | 2016-05-15 | C-MEP-FF-2244 SS+5d, C-MEP-PD-2805 SS+5d | 7d | 0d | 21,017.55 |  |
| C-MEP-E-3376 |  | Installation of Electrical Second Fix (Cabling & Wirring etc..). at LR level | 18d | 2016-05-16 | 2016-06-05 | C-MEP-E-3366, C-MEP-E-3406 | 7d | 0d | 190,528.33 | GEN |
| C-MEP-E-3386 |  | Installation & Connection of Electrical DB's, SMDB's at LR level | 16d | 2016-06-06 | 2016-06-23 | C-MEP-E-3376 | 7d | 0d | 78,921.15 | GEN |
| C-MEP-E-3396 |  | Installation & Connection of Lighting Fixtures & Sockets at LR level | 14d | 2017-01-03 | 2017-01-18 | C-MEP-E-3376, C-F-CF-3957, C-F-WF-2254, C-F-WF-2264, C-MEP-BMS-3035, C-ELV-SMATV-2825, C-ELV-CCTV-2825, C-ELV-FA-2825, C-ELV-MSPA-2825, C-ELV-RMS-3295, C-ELV-CS-2825, C-MEP-PD-2825, C-MEP-PD-2835, C-MEP-FF-2254, C-MEP-FF-2264, C-MEP-AC-4518, C-MEP-AC-4548, C-MEP-AC-4498, C-F-CF-3967 | 25d | 7d | 71,857.69 | GEN |
|  | 2 | **HVAC** |  | 2016-04-13 | 2017-01-02 |  |  |  |  |  |
| C-MEP-AC-4488 |  | Installation of Ductwork, Insulation & Dampers at LR level | 23d | 2016-04-13 | 2016-05-09 | C-F-P-3413 SS | 7d | 0d | 82,961.13 | GEN |
| C-MEP-AC-4508 |  | Installation of Chilled Water Pipes & Valves at LR level | 25d | 2016-04-25 | 2016-05-23 | C-MEP-AC-4488 SS+10d | 54d | 0d | 30,741.92 | GEN |
| C-MEP-AC-4548 |  | Installation of HVAC equipments AHU's, FCU's, ERU's, VAV's, CAV's & Fans at LR level | 25d | 2016-05-09 | 2016-06-06 | C-MEP-AC-4538 FF, C-MEP-AC-4528 FF, C-MEP-AC-4488 SS | 54d | 29d | 168,554.51 | GEN |
| C-MEP-AC-4538 |  | Pressure testing of Ductwork at LR level | 8d | 2016-05-10 | 2016-05-18 | C-MEP-AC-4488 | 70d | 0d |  | GEN |
| C-MEP-AC-4498 |  | Installation of Silencers, Attenuators, Isolators & Detectors at LR level | 12d | 2016-05-19 | 2016-06-01 | C-MEP-AC-4538 | 78d | 53d | 11,510.55 | GEN |
| C-MEP-AC-4528 |  | Pressure testing & Insulation of Chilled Water Pipes at LR level | 12d | 2016-05-24 | 2016-06-06 | C-MEP-AC-4508 | 54d | 0d | 8,821.1 | GEN |
| C-MEP-AC-4518 |  | Installation of Chilled Water Pipes Control Devices & Isolator at LR level | 8d | 2016-06-07 | 2016-06-15 | C-MEP-AC-4528 | 66d | 41d | 2,889.38 | GEN |
| C-MEP-AC-4558 |  | Installation of Grilles, Diffusers & Controller at LR level | 12d | 2016-12-20 | 2017-01-02 | C-MEP-AC-4548, C-F-CF-3957, C-F-WF-2264 FF, C-F-WF-2254 FF, C-MEP-BMS-3035, C-MEP-BMS-3035 FF, C-ELV-SMATV-2825, C-ELV-SMATV-2825 FF, C-ELV-CCTV-2825, C-ELV-CCTV-2825 FF, C-ELV-FA-2825, C-ELV-FA-2825 FF, C-ELV-MSPA-2825, C-ELV-MSPA-2825 FF, C-ELV-RMS-3295, C-ELV-RMS-3295 FF, C-ELV-CS-2825, C-ELV-CS-2825 FF, C-MEP-PD-2825, C-MEP-PD-2825 FF, C-MEP-PD-2835, C-MEP-PD-2835 FF, C-MEP-FF-2254, C-MEP-FF-2254 FF, C-MEP-FF-2264, C-MEP-FF-2264 FF, C-MEP-AC-4518, C-MEP-AC-4518 FF, C-MEP-AC-4548 FF, C-MEP-AC-4498, C-MEP-AC-4498 FF, C-MEP-E-3376, C-MEP-E-3376 FF, C-F-CF-3967, C-F-CF-3967 FF | 61d | 46d | 22,749.1 | GEN |

Notes:
- C-MEP-BMS-2605: Expenses: 1 8895.95
- C-MEP-BMS-2615: Expenses: 1 11861.3
- C-MEP-BMS-2625: Expenses: 1 14826.6
- C-MEP-BMS-2635: Expenses: 1 14826.6
- C-MEP-Gas-975: Expenses: 1 4994.14
- C-MEP-Gas-2985: Expenses: 1 3329.43
- C-MEP-E-3366: Expenses: 1 55235.7
- C-MEP-E-3406: Expenses: 1 21017.5
- C-MEP-E-3376: Expenses: 1 57962.7; 2 132566
- C-MEP-E-3386: Expenses: 1 78921.1
- C-MEP-E-3396: Expenses: 1 71857.7
- C-MEP-AC-4488: Expenses: 1 82961.1
- C-MEP-AC-4508: Expenses: 1 30741.9
- C-MEP-AC-4548: Expenses: 1 168555
- C-MEP-AC-4498: Expenses: 1 11510.5
- C-MEP-AC-4528: Expenses: 1 8821.1
- C-MEP-AC-4518: Expenses: 1 2889.38
- C-MEP-AC-4558: Expenses: 1 22749.1

| ID | WBS | Activity | Duration | Start | Finish | Predecessors | Total float | Free float | Cost | AREA |
| --- | --- | --- | --- | --- | --- | --- | --- | --- | --- | --- |
|  | 3 | **Fire Fighting** |  | 2016-04-19 | 2016-09-25 |  |  |  |  |  |
| C-MEP-FF-2244 |  | Installation of FIre fighting Pipes at LR level | 25d | 2016-04-19 | 2016-05-17 | C-MEP-AC-4488 SS+5d | 7d | 0d | 45,406.88 | GEN |
| C-MEP-FF-2264 |  | Pressure testing of fire fighting pipes at LR level | 8d | 2016-05-18 | 2016-05-26 | C-MEP-FF-2244 | 43d | 0d | 5,280.67 | GEN |
| C-MEP-FF-2254 |  | Installation of fire Fighting Valves at LR level | 20d | 2016-05-28 | 2016-06-19 | C-MEP-FF-2264 | 43d | 18d | 18,427.34 | GEN |
| C-MEP-FF-2274 |  | Installation of Fire Fighting Sprinklers & Fire hose Cabinets & Extinguishers at LR level | 14d | 2016-09-05 | 2016-09-25 | C-MEP-FF-2254, C-F-CF-3937, C-MEP-FF-2264, C-MEP-BMS-3035, C-ELV-SMATV-2825, C-ELV-CCTV-2825, C-ELV-FA-2825, C-ELV-MSPA-2825, C-ELV-RMS-3295, C-ELV-CS-2825, C-MEP-PD-2825, C-MEP-PD-2835, C-MEP-AC-4518, C-MEP-AC-4548, C-MEP-AC-4498, C-MEP-E-3376, C-F-CF-3967 | 89d | 0d | 64,097.37 | GEN |
|  | 4 | **Plumbing & Drainage** |  | 2016-04-19 | 2016-12-27 |  |  |  |  |  |
| C-MEP-PD-2805 |  | Installation of Water Pipes & Valves (Hot & Cold atc..) at LR level | 20d | 2016-04-19 | 2016-05-11 | C-MEP-FF-2244 SS, C-F-P-3423 FF+18d | 7d | 0d | 83,874.06 | GEN |
| C-MEP-PD-2815 |  | Installation drainage Pipes at LR level | 25d | 2016-04-19 | 2016-05-17 | C-MEP-PD-2805 SS | 63d | 0d | 30,204.4 | GEN |
| C-MEP-PD-2825 |  | Pressure testing & Insullation of water pipes at LR level | 8d | 2016-05-12 | 2016-05-21 | C-MEP-PD-2805 | 68d | 43d | 9,573.63 | GEN |
| C-MEP-PD-2835 |  | Pressure testing of drainage pipes at LR level | 8d | 2016-05-18 | 2016-05-26 | C-MEP-PD-2815 | 63d | 38d | 1,651.42 | GEN |
| C-MEP-PD-2845 |  | Installation of Outlets, Drains, Gullies, Cowls, & Clean out at LR level | 20d | 2016-12-04 | 2016-12-27 | C-MEP-PD-2825, C-MEP-PD-2825 FF, C-F-FF-2254, C-F-WF-2254, C-F-FF-2254 FF, C-F-WF-2274, C-F-WF-2254 FF, C-F-DW-2274 | 66d | 51d | 13,120.28 | GEN |
|  | 7 | **ELV systems** |  | 2016-04-21 | 2016-08-28 |  |  |  |  |  |
|  | 1 | **Room Management System** |  | 2016-04-21 | 2016-08-22 |  |  |  |  |  |
| C-ELV-RMS-3275 |  | Installation of RMS first fix (Conduits, Boxes within block work , Gypsum Boards & Raised FLooring at LR level | 20d | 2016-04-21 | 2016-05-14 | C-F-P-3423, C-F-P-3413 | 44d | 0d | 11,902.78 | GEN |
| C-ELV-RMS-3315 |  | Installation of Cable Trays & Truncking at LR level | 25d | 2016-05-01 | 2016-05-29 | C-ELV-CS-2845 SS+5d | 25d | 0d | 2,769.38 |  |
| C-ELV-RMS-3285 |  | Installation of second fix (Cabling & Wirring etc..) at LR level | 25d | 2016-05-30 | 2016-06-27 | C-ELV-RMS-3275, C-ELV-RMS-3315 | 31d | 0d | 11,902.78 | GEN |
| C-ELV-RMS-3295 |  | Installation & Connection of ethernets & HVAC thermostates etc..at LR level | 25d | 2016-06-28 | 2016-07-30 | C-ELV-RMS-3285 | 31d | 0d | 27,773.16 | GEN |
| C-ELV-RMS-3305 |  | Installtion & Connection of Panels, Controller, switches, server etc..) at LR level | 20d | 2016-07-31 | 2016-08-22 | C-ELV-RMS-3295 | 154d | 104d | 27,773.16 |  |
|  | 12 | **Fire Alarm & Detection System** |  | 2016-04-21 | 2016-08-28 |  |  |  |  |  |
| C-ELV-FA-2805 |  | Installation of FA first Fix Conduits, Boxes within block work , Gypsum Boards & Raised FLooring at LR level | 20d | 2016-04-21 | 2016-05-14 | C-F-P-3423, C-F-P-3413 | 49d | 0d | 13,660.92 | GEN |
| C-ELV-FA-2845 |  | Installation of Cable Trays & Truncking at LR level | 25d | 2016-05-12 | 2016-06-09 | C-ELV-MSPA-2845 SS+5d | 25d | 0d | 2,769.38 |  |
| C-ELV-FA-2815 |  | Installation of second fix (Cabling & Wirring etc..) at LR level | 20d | 2016-06-11 | 2016-07-03 | C-ELV-FA-2805, C-ELV-FA-2845 | 26d | 0d | 22,768.2 | GEN |
| C-ELV-FA-2825 |  | Installation & Connection of heat detector, smoke detector, flame detector etc..at LR level | 25d | 2016-07-04 | 2016-08-04 | C-ELV-FA-2815 | 26d | 0d | 27,321.84 | GEN |
| C-ELV-FA-2835 |  | Installtion & Connection of Racks & Panels at LR level | 20d | 2016-08-06 | 2016-08-28 | C-ELV-FA-2825 | 149d | 99d | 27,321.84 |  |

Notes:
- C-MEP-FF-2244: Expenses: 1 45406.9
- C-MEP-FF-2264: Expenses: 1 5280.67
- C-MEP-FF-2254: Expenses: 1 18427.3
- C-MEP-FF-2274: Expenses: 1 64097.4
- C-MEP-PD-2805: Expenses: 1 83874.1
- C-MEP-PD-2815: Expenses: 1 30204.4
- C-MEP-PD-2825: Expenses: 1 9573.63
- C-MEP-PD-2835: Expenses: 1 1651.42
- C-MEP-PD-2845: Expenses: 1 13120.3
- C-ELV-RMS-3275: Expenses: 1 11902.8
- C-ELV-RMS-3315: Expenses: 1 2769.38
- C-ELV-RMS-3285: Expenses: 1 11902.8
- C-ELV-RMS-3295: Expenses: 1 27773.2
- C-ELV-RMS-3305: Expenses: 1 27773.2
- C-ELV-FA-2805: Expenses: 1 13660.9
- C-ELV-FA-2845: Expenses: 1 2769.38
- C-ELV-FA-2815: Expenses: 1 22768.2
- C-ELV-FA-2825: Expenses: 1 27321.8
- C-ELV-FA-2835: Expenses: 1 27321.8

| ID | WBS | Activity | Duration | Start | Finish | Predecessors | Total float | Free float | Cost | AREA |
| --- | --- | --- | --- | --- | --- | --- | --- | --- | --- | --- |
|  | 2 | **Music System & Public Address System** |  | 2016-04-21 | 2016-08-28 |  |  |  |  |  |
| C-ELV-MSPA-2805 |  | Installation of MS/PA first fix (Conduits, Boxes within block work, Gypsum Boards & Raised FLooring at LR level | 20d | 2016-04-21 | 2016-05-14 | C-F-P-3423, C-F-P-3413 | 44d | 0d | 6,994.34 | GEN |
| C-ELV-MSPA-2845 |  | Installation of Cable Trays & Truncking at LR level | 25d | 2016-05-07 | 2016-06-04 | C-ELV-RMS-3315 SS+5d | 25d | 0d | 2,769.38 |  |
| C-ELV-MSPA-2815 |  | Installation of second fix (Cabling & Wirring etc..) at LR level | 25d | 2016-06-05 | 2016-07-03 | C-ELV-MSPA-2805, C-ELV-MSPA-2845 | 26d | 0d | 6,994.34 | GEN |
| C-ELV-MSPA-2825 |  | Installation & Connection of speakers, Amplifier & Controller at LR level | 25d | 2016-07-04 | 2016-08-04 | C-ELV-MSPA-2815 | 26d | 0d | 16,320.12 | GEN |
| C-ELV-MSPA-2835 |  | Installtion & Connection of Media hub, panels and processor at LR level | 20d | 2016-08-06 | 2016-08-28 | C-ELV-MSPA-2825 | 149d | 99d | 16,320.12 |  |
|  | 3 | **IP CCTV & Access Control System** |  | 2016-04-21 | 2016-08-02 |  |  |  |  |  |
| C-ELV-CCTV-2805 |  | Installation of CCTV first Fix Conduits, Boxes within block work, Gypsum Boards & Raised FLooring at LR level | 20d | 2016-04-21 | 2016-05-14 | C-F-P-3423, C-F-P-3413 | 56d | 0d | 8,161.35 | GEN |
| C-ELV-CCTV-2845 |  | Installation of Cable Trays & Truncking at LR level | 25d | 2016-05-18 | 2016-06-15 | C-ELV-FA-2845 SS+5d | 25d | 0d | 2,769.38 |  |
| C-ELV-CCTV-2815 |  | Installation of second fix (Cabling & Wirring etc..) at LR level | 20d | 2016-06-16 | 2016-07-12 | C-ELV-CCTV-2805, C-ELV-CCTV-2845 | 28d | 0d | 19,043.14 | GEN |
| C-ELV-CCTV-2835 |  | Installtion & Connection of Racks, Panels etc... at LR level | 25d | 2016-07-02 | 2016-08-02 | C-ELV-CCTV-2825 FF | 171d | 121d | 7,322.52 |  |
| C-ELV-CCTV-2825 |  | Installation & Connection of Camera's & Alarms at LR level | 18d | 2016-07-13 | 2016-08-02 | C-ELV-CCTV-2815 | 28d | 0d | 183,698.91 | GEN |
|  | 7 | **Communication System** |  | 2016-04-21 | 2016-08-16 |  |  |  |  |  |
| C-ELV-CS-2805 |  | Installation of CS first fix (Conduits, Boxes within block work, Gypsum Boards & Raised FLooring at LR level | 20d | 2016-04-21 | 2016-05-14 | C-F-P-3423, C-F-P-3413 | 44d | 0d | 27,356.12 | GEN |
| C-ELV-CS-2845 |  | Installation of Cable Trays & Truncking at LR level | 25d | 2016-04-25 | 2016-05-23 | C-MEP-E-3406 SS | 25d | 0d | 2,769.38 |  |
| C-ELV-CS-2815 |  | Installation of second fix (Cabling & Wirring etc..) at LR level | 25d | 2016-05-24 | 2016-06-21 | C-ELV-CS-2805, C-ELV-CS-2845 | 36d | 0d | 82,068.35 | GEN |
| C-ELV-CS-2825 |  | Installation & Connection of Wireless Access points & IP dect phone & RJ 45 at LR level | 25d | 2016-06-22 | 2016-07-24 | C-ELV-CS-2815 | 36d | 0d | 93,342.54 | GEN |
| C-ELV-CS-2835 |  | Installtion & Connection of Controller & Instrumentation at LR level | 20d | 2016-07-25 | 2016-08-16 | C-ELV-CS-2825 | 175d | 157d | 223,314.69 |  |
|  | 4 | **IP, SMATV & QAM Television System** |  | 2016-04-21 | 2016-08-27 |  |  |  |  |  |
| C-ELV-SMATV-2805 |  | Installation of SMATV first Fix Conduits, Boxes within block work , Gypsum Boards & Raised FLooring at LR level | 20d | 2016-04-21 | 2016-05-14 | C-F-P-3423, C-F-P-3413 | 60d | 0d | 4,452.18 | GEN |
| C-ELV-SMATV-2845 |  | Installation of Cable Trays & Truncking at LR level | 25d | 2016-05-24 | 2016-06-21 | C-ELV-CCTV-2845 SS+5d | 25d | 0d | 2,769.38 |  |
| C-ELV-SMATV-2815 |  | Installation of second fix (Cabling & Wirring etc..) at LR level | 16d | 2016-06-22 | 2016-07-13 | C-ELV-SMATV-2805, C-ELV-SMATV-2845 | 27d | 0d | 10,388.41 | GEN |
| C-ELV-SMATV-2825 |  | Installation & Connection of Outlets, switches and splitter at LR level | 18d | 2016-07-14 | 2016-08-03 | C-ELV-SMATV-2815 | 27d | 0d | 6,537.45 | GEN |
| C-ELV-SMATV-2835 |  | Installtion & Connection of SMATV & QAM fiber & receiver at LR level | 20d | 2016-08-04 | 2016-08-27 | C-ELV-SMATV-2825 | 150d | 100d | 2,419.21 |  |

Notes:
- C-ELV-MSPA-2805: Expenses: 1 6994.34
- C-ELV-MSPA-2845: Expenses: 1 2769.38
- C-ELV-MSPA-2815: Expenses: 1 6994.34
- C-ELV-MSPA-2825: Expenses: 1 16320.1
- C-ELV-MSPA-2835: Expenses: 1 16320.1
- C-ELV-CCTV-2805: Expenses: 1 8161.35
- C-ELV-CCTV-2845: Expenses: 1 2769.38
- C-ELV-CCTV-2815: Expenses: 1 19043.1
- C-ELV-CCTV-2835: Expenses: 1 7322.52
- C-ELV-CCTV-2825: Expenses: 1 183699
- C-ELV-CS-2805: Expenses: 1 27356.1
- C-ELV-CS-2845: Expenses: 1 2769.38
- C-ELV-CS-2815: Expenses: 1 82068.4
- C-ELV-CS-2825: Expenses: 1 93342.5
- C-ELV-CS-2835: Expenses: 1 223315
- C-ELV-SMATV-2805: Expenses: 1 4452.18
- C-ELV-SMATV-2845: Expenses: 1 2769.38
- C-ELV-SMATV-2815: Expenses: 1 10388.4
- C-ELV-SMATV-2825: Expenses: 1 6537.45
- C-ELV-SMATV-2835: Expenses: 1 2419.21

| ID | WBS | Activity | Duration | Start | Finish | Predecessors | Total float | Free float | Calendar | Cost | AREA |
| --- | --- | --- | --- | --- | --- | --- | --- | --- | --- | --- | --- |
|  | 5 | **BMS system** |  | 2016-04-21 | 2016-08-29 |  |  |  |  |  |  |
| C-MEP-BMS-3015 |  | Installation of BMS first Fix Conduits, Boxes within block work , Gypsum Boards & Raised FLooring at LR level | 20d | 2016-04-21 | 2016-05-14 | C-F-P-3423, C-F-P-3413 | 58d | 0d |  | 8,895.95 | GEN |
| C-MEP-BMS-3055 |  | Installation of Cable trays & Trunking at LR level | 20d | 2016-05-30 | 2016-06-21 | C-ELV-SMATV-2845 SS+5d | 25d | 0d |  |  |  |
| C-MEP-BMS-3025 |  | Installation of BMS Cabling & Wirring at LR level | 16d | 2016-06-22 | 2016-07-13 | C-MEP-BMS-3015, C-MEP-BMS-3055 | 25d | 0d |  | 11,861.27 | GEN |
| C-MEP-BMS-3035 |  | Installation & Connection of BMS Sensors, Relays, & Valves at LR level | 20d | 2016-07-14 | 2016-08-06 | C-MEP-BMS-3025, C-MEP-PD-2835, C-MEP-PD-2825, C-MEP-FF-2254, C-MEP-AC-4548, C-MEP-AC-4528, C-MEP-AC-4538 | 25d | 0d |  | 14,826.58 | GEN |
| C-MEP-BMS-3045 |  | Installtion & Connection of BMS Racks, Panels etc... at LR level | 20d | 2016-08-07 | 2016-08-29 | C-MEP-BMS-3035 | 113d | 98d |  | 14,826.58 |  |
|  | 56 | **MEP - Top Roof Level** |  | 2016-04-21 | 2017-01-26 |  |  |  |  |  |  |
|  | 1 | **Electrical** |  | 2016-04-30 | 2017-01-26 |  |  |  |  |  |  |
| C-MEP-E-3426 |  | Installation of first Electrical Fix Conduits, Boxes within block work & Gypsum Boards at TR level | 20d | 2016-04-30 | 2016-05-22 | C-F-P-3443 | 1d | 0d |  | 55,235.7 | GEN |
| C-MEP-E-3466 |  | Installation of Cable Trays & Truncking at TR level | 18d | 2016-05-03 | 2016-05-23 | C-MEP-FF-2284 SS+5d, C-MEP-PD-2855 SS+5d | 0d |  |  | 21,017.55 |  |
| C-MEP-E-3476 |  | Installation, Connection & testing of Aircraft warning Lights at TR level | 14d | 2016-05-15 | 2016-05-30 | P-MEP-E-5523, C-SS-RCS-414 | 226d | 207d | *APB - 6 D week + Qatar Holiday |  |  |
| C-MEP-E-3436 |  | Installation of Electrical Second Fix (Cabling & Wirring etc..). at TR level | 18d | 2016-05-24 | 2016-06-13 | C-MEP-E-3426, C-MEP-E-3466 | 0d |  |  | 190,528.33 | GEN |
| C-MEP-E-3446 |  | Installation & Connection of Electrical DB's, SMDB's at TR level | 16d | 2016-06-14 | 2016-07-02 | C-MEP-E-3436 | 0d |  |  | 78,921.15 | GEN |
| C-MEP-E-3456 |  | Installation & Connection of Lighting Fixtures & Sockets at TR level | 14d | 2017-01-11 | 2017-01-26 | C-MEP-E-3436, C-F-CF-4007, C-F-WF-2294, C-F-WF-2304, C-MEP-BMS-3105, C-ELV-SMATV-2875, C-ELV-CCTV-2875, C-ELV-FA-2875, C-ELV-MSPA-2875, C-ELV-RMS-3345, C-ELV-CS-2875, C-MEP-PD-2875, C-MEP-PD-2885, C-MEP-FF-2294, C-MEP-FF-2304, C-MEP-AC-4598, C-MEP-AC-4628, C-MEP-AC-4578, C-F-CF-4017 | 18d | 0d |  | 71,857.69 | GEN |
|  | 2 | **HVAC** |  | 2016-04-21 | 2017-01-10 |  |  |  |  |  |  |
| C-MEP-AC-4568 |  | Installation of Ductwork, Insulation & Dampers at TR level | 23d | 2016-04-21 | 2016-05-17 | C-F-P-3443 SS | 0d |  |  | 82,961.13 | GEN |
| C-MEP-AC-4588 |  | Installation of Chilled Water Pipes & Valves at TR level | 25d | 2016-05-03 | 2016-05-31 | C-MEP-AC-4568 SS+10d | 47d | 0d |  | 30,741.92 | GEN |
| C-MEP-AC-4628 |  | Installation of HVAC equipments AHU's, FCU's, ERU's, VAV's, CAV's & Fans at TR level | 25d | 2016-05-17 | 2016-06-14 | C-MEP-AC-4618 FF, C-MEP-AC-4608 FF, C-MEP-AC-4568 SS | 47d | 29d |  | 48,705.96 | GEN |
| C-MEP-AC-4618 |  | Pressure testing of Ductwork at TR level | 8d | 2016-05-18 | 2016-05-26 | C-MEP-AC-4568 | 63d | 0d |  |  | GEN |
| C-MEP-AC-4578 |  | Installation of Silencers, Attenuators, Isolators & Detectors at TR level | 12d | 2016-05-28 | 2016-06-09 | C-MEP-AC-4618 | 71d | 53d |  | 11,510.55 | GEN |
| C-MEP-AC-4608 |  | Pressure testing & Insulation of Chilled Water Pipes at TR level | 12d | 2016-06-01 | 2016-06-14 | C-MEP-AC-4588 | 47d | 0d |  | 8,821.1 | GEN |
| C-MEP-AC-4598 |  | Installation of Chilled Water Pipes Control Devices & Isolator at TR level | 8d | 2016-06-15 | 2016-06-23 | C-MEP-AC-4608 | 59d | 41d |  | 2,889.38 | GEN |
| C-MEP-AC-4638 |  | Installation of Grilles, Diffusers & Controller at TR level | 12d | 2016-12-28 | 2017-01-10 | C-MEP-AC-4628, C-F-CF-4007, C-F-WF-2304 FF, C-F-WF-2294 FF, C-MEP-BMS-3105, C-MEP-BMS-3105 FF, C-ELV-SMATV-2875, C-ELV-SMATV-2875 FF, C-ELV-CCTV-2875, C-ELV-CCTV-2875 FF, C-ELV-FA-2875, C-ELV-FA-2875 FF, C-ELV-MSPA-2875, C-ELV-MSPA-2875 FF, C-ELV-RMS-3345, C-ELV-RMS-3345 FF, C-ELV-CS-2875, C-ELV-CS-2875 FF, C-MEP-PD-2875, C-MEP-PD-2875 FF, C-MEP-PD-2885, C-MEP-PD-2885 FF, C-MEP-FF-2294, C-MEP-FF-2294 FF, C-MEP-FF-2304, C-MEP-FF-2304 FF, C-MEP-AC-4598, C-MEP-AC-4598 FF, C-MEP-AC-4628 FF, C-MEP-AC-4578, C-MEP-AC-4578 FF, C-MEP-E-3436, C-MEP-E-3436 FF, C-F-CF-4017, C-F-CF-4017 FF | 54d | 39d |  | 22,749.1 | GEN |
|  | 3 | **Fire Fighting** |  | 2016-04-27 | 2016-10-03 |  |  |  |  |  |  |
| C-MEP-FF-2284 |  | Installation of FIre fighting Pipes at TR level | 25d | 2016-04-27 | 2016-05-25 | C-MEP-AC-4568 SS+5d | 0d |  |  | 45,406.88 | GEN |
| C-MEP-FF-2304 |  | Pressure testing of fire fighting pipes at TR level | 8d | 2016-05-26 | 2016-06-04 | C-MEP-FF-2284 | 36d | 0d |  | 5,280.67 | GEN |
| C-MEP-FF-2294 |  | Installation of fire Fighting Valves at TR level | 20d | 2016-06-05 | 2016-06-27 | C-MEP-FF-2304 | 36d | 18d |  | 18,427.34 | GEN |
| C-MEP-FF-2314 |  | Installation of Fire Fighting Sprinklers & Fire hose Cabinets & Extinguishers at TR level | 14d | 2016-09-17 | 2016-10-03 | C-MEP-FF-2294, C-F-CF-3987, C-MEP-FF-2304, C-MEP-BMS-3105, C-ELV-SMATV-2875, C-ELV-CCTV-2875, C-ELV-FA-2875, C-ELV-MSPA-2875, C-ELV-RMS-3345, C-ELV-CS-2875, C-MEP-PD-2875, C-MEP-PD-2885, C-MEP-AC-4598, C-MEP-AC-4628, C-MEP-AC-4578, C-MEP-E-3436, C-F-CF-4017 | 82d | 0d |  | 64,097.37 | GEN |

Notes:
- C-MEP-BMS-3015: Expenses: 1 8895.95
- C-MEP-BMS-3025: Expenses: 1 11861.3
- C-MEP-BMS-3035: Expenses: 1 14826.6
- C-MEP-BMS-3045: Expenses: 1 14826.6
- C-MEP-E-3426: Expenses: 1 55235.7
- C-MEP-E-3466: Expenses: 1 21017.5
- C-MEP-E-3436: Expenses: 1 57962.7; 2 132566
- C-MEP-E-3446: Expenses: 1 78921.1
- C-MEP-E-3456: Expenses: 1 71857.7
- C-MEP-AC-4568: Expenses: 1 82961.1
- C-MEP-AC-4588: Expenses: 1 30741.9
- C-MEP-AC-4628: Expenses: 1 48706
- C-MEP-AC-4578: Expenses: 1 11510.5
- C-MEP-AC-4608: Expenses: 1 8821.1
- C-MEP-AC-4598: Expenses: 1 2889.38
- C-MEP-AC-4638: Expenses: 1 22749.1
- C-MEP-FF-2284: Expenses: 1 45406.9
- C-MEP-FF-2304: Expenses: 1 5280.67
- C-MEP-FF-2294: Expenses: 1 18427.3
- C-MEP-FF-2314: Expenses: 1 64097.4

| ID | WBS | Activity | Duration | Start | Finish | Predecessors | Total float | Free float | Cost | AREA |
| --- | --- | --- | --- | --- | --- | --- | --- | --- | --- | --- |
|  | 4 | **Plumbing & Drainage** |  | 2016-04-27 | 2017-01-04 |  |  |  |  |  |
| C-MEP-PD-2855 |  | Installation of Water Pipes & Valves (Hot & Cold atc..) at TR level | 20d | 2016-04-27 | 2016-05-19 | C-MEP-FF-2284 SS, C-F-P-3453 FF+18d | 0d |  | 83,874.06 | GEN |
| C-MEP-PD-2865 |  | Installation drainage Pipes at TR level | 25d | 2016-04-27 | 2016-05-25 | C-MEP-PD-2855 SS | 56d | 0d | 30,204.4 | GEN |
| C-MEP-PD-2875 |  | Pressure testing & Insullation of water pipes at TR level | 8d | 2016-05-21 | 2016-05-29 | C-MEP-PD-2855 | 61d | 43d | 9,573.63 | GEN |
| C-MEP-PD-2885 |  | Pressure testing of drainage pipes at TR level | 8d | 2016-05-26 | 2016-06-04 | C-MEP-PD-2865 | 56d | 38d | 1,651.42 | GEN |
| C-MEP-PD-2895 |  | Installation of Outlets, Drains, Gullies, Cowls, & Clean out at TR level | 20d | 2016-12-12 | 2017-01-04 | C-MEP-PD-2875, C-MEP-PD-2875 FF, C-F-FF-2294, C-F-WF-2294, C-F-FF-2294 FF, C-F-WF-2314, C-F-WF-2294 FF, C-F-DW-2314 | 59d | 44d | 13,120.28 | GEN |
|  | 7 | **ELV systems** |  | 2016-04-30 | 2016-09-05 |  |  |  |  |  |
|  | 1 | **Room Management System** |  | 2016-04-30 | 2016-08-30 |  |  |  |  |  |
| C-ELV-RMS-3325 |  | Installation of RMS first fix (Conduits, Boxes within block work , Gypsum Boards & Raised FLooring at TR level | 20d | 2016-04-30 | 2016-05-22 | C-F-P-3453, C-F-P-3443 | 37d | 0d | 11,902.78 | GEN |
| C-ELV-RMS-3365 |  | Installation of Cable Trays & Truncking at TR level | 25d | 2016-05-09 | 2016-06-06 | C-ELV-CS-2895 SS+5d | 18d | 0d | 2,769.38 |  |
| C-ELV-RMS-3335 |  | Installation of second fix (Cabling & Wirring etc..) at TR level | 25d | 2016-06-07 | 2016-07-09 | C-ELV-RMS-3325, C-ELV-RMS-3365 | 24d | 0d | 11,902.78 | GEN |
| C-ELV-RMS-3345 |  | Installation & Connection of ethernets & HVAC thermostates etc.. at TR level | 25d | 2016-07-10 | 2016-08-07 | C-ELV-RMS-3335 | 24d | 0d | 27,773.16 | GEN |
| C-ELV-RMS-3355 |  | Installtion & Connection of Panels, Controller, switches, server etc..) at TR level | 20d | 2016-08-08 | 2016-08-30 | C-ELV-RMS-3345 | 147d | 97d | 27,773.16 |  |
|  | 12 | **Fire Alarm & Detection System** |  | 2016-04-30 | 2016-09-05 |  |  |  |  |  |
| C-ELV-FA-2855 |  | Installation of FA first Fix Conduits, Boxes within block work , Gypsum Boards & Raised FLooring at TR level | 20d | 2016-04-30 | 2016-05-22 | C-F-P-3453, C-F-P-3443 | 42d | 0d | 13,660.92 | GEN |
| C-ELV-FA-2895 |  | Installation of Cable Trays & Truncking at TR level | 25d | 2016-05-21 | 2016-06-18 | C-ELV-MSPA-2895 SS+5d | 18d | 0d | 2,769.38 |  |
| C-ELV-FA-2865 |  | Installation of second fix (Cabling & Wirring etc..) at TR level | 20d | 2016-06-19 | 2016-07-14 | C-ELV-FA-2855, C-ELV-FA-2895 | 19d | 0d | 22,768.2 | GEN |
| C-ELV-FA-2875 |  | Installation & Connection of heat detector, smoke detector, flame detector etc.. at TR level | 25d | 2016-07-16 | 2016-08-13 | C-ELV-FA-2865 | 19d | 0d | 27,321.84 | GEN |
| C-ELV-FA-2885 |  | Installtion & Connection of Racks & Panels at TR level | 20d | 2016-08-14 | 2016-09-05 | C-ELV-FA-2875 | 142d | 92d | 27,321.84 |  |
|  | 2 | **Music System & Public Address System** |  | 2016-04-30 | 2016-09-05 |  |  |  |  |  |
| C-ELV-MSPA-2855 |  | Installation of MS/PA first fix (Conduits, Boxes within block work, Gypsum Boards & Raised FLooring at TR level | 20d | 2016-04-30 | 2016-05-22 | C-F-P-3453, C-F-P-3443 | 37d | 0d | 6,994.34 | GEN |
| C-ELV-MSPA-2895 |  | Installation of Cable Trays & Truncking at TR level | 25d | 2016-05-15 | 2016-06-12 | C-ELV-RMS-3365 SS+5d | 18d | 0d | 2,769.38 |  |
| C-ELV-MSPA-2865 |  | Installation of second fix (Cabling & Wirring etc..) at TR level | 25d | 2016-06-13 | 2016-07-14 | C-ELV-MSPA-2855, C-ELV-MSPA-2895 | 19d | 0d | 6,994.34 | GEN |
| C-ELV-MSPA-2875 |  | Installation & Connection of speakers, Amplifier & Controller at TR level | 25d | 2016-07-16 | 2016-08-13 | C-ELV-MSPA-2865 | 19d | 0d | 16,320.12 | GEN |
| C-ELV-MSPA-2885 |  | Installtion & Connection of Media hub, panels and processor at TR level | 20d | 2016-08-14 | 2016-09-05 | C-ELV-MSPA-2875 | 142d | 92d | 16,320.12 |  |

Notes:
- C-MEP-PD-2855: Expenses: 1 83874.1
- C-MEP-PD-2865: Expenses: 1 30204.4
- C-MEP-PD-2875: Expenses: 1 9573.63
- C-MEP-PD-2885: Expenses: 1 1651.42
- C-MEP-PD-2895: Expenses: 1 13120.3
- C-ELV-RMS-3325: Expenses: 1 11902.8
- C-ELV-RMS-3365: Expenses: 1 2769.38
- C-ELV-RMS-3335: Expenses: 1 11902.8
- C-ELV-RMS-3345: Expenses: 1 27773.2
- C-ELV-RMS-3355: Expenses: 1 27773.2
- C-ELV-FA-2855: Expenses: 1 13660.9
- C-ELV-FA-2895: Expenses: 1 2769.38
- C-ELV-FA-2865: Expenses: 1 22768.2
- C-ELV-FA-2875: Expenses: 1 27321.8
- C-ELV-FA-2885: Expenses: 1 27321.8
- C-ELV-MSPA-2855: Expenses: 1 6994.34
- C-ELV-MSPA-2895: Expenses: 1 2769.38
- C-ELV-MSPA-2865: Expenses: 1 6994.34
- C-ELV-MSPA-2875: Expenses: 1 16320.1
- C-ELV-MSPA-2885: Expenses: 1 16320.1

| ID | WBS | Activity | Duration | Start | Finish | Predecessors | Total float | Free float | Cost | AREA |
| --- | --- | --- | --- | --- | --- | --- | --- | --- | --- | --- |
|  | 3 | **IP CCTV & Access Control System** |  | 2016-04-30 | 2016-08-10 |  |  |  |  |  |
| C-ELV-CCTV-2855 |  | Installation of CCTV first Fix Conduits, Boxes within block work, Gypsum Boards & Raised FLooring at TR level | 20d | 2016-04-30 | 2016-05-22 | C-F-P-3453, C-F-P-3443 | 49d | 0d | 8,161.35 | GEN |
| C-ELV-CCTV-2895 |  | Installation of Cable Trays & Truncking at TR level | 25d | 2016-05-26 | 2016-06-23 | C-ELV-FA-2895 SS+5d | 18d | 0d | 2,769.38 |  |
| C-ELV-CCTV-2865 |  | Installation of second fix (Cabling & Wirring etc..) at TR level | 20d | 2016-06-25 | 2016-07-20 | C-ELV-CCTV-2855, C-ELV-CCTV-2895 | 21d | 0d | 19,043.14 | GEN |
| C-ELV-CCTV-2885 |  | Installtion & Connection of Racks, Panels etc... at TR level | 25d | 2016-07-13 | 2016-08-10 | C-ELV-CCTV-2875 FF | 164d | 114d | 7,322.52 |  |
| C-ELV-CCTV-2875 |  | Installation & Connection of Camera's & Alarms at TR level | 18d | 2016-07-21 | 2016-08-10 | C-ELV-CCTV-2865 | 21d | 0d | 183,698.91 | GEN |
|  | 7 | **Communication System** |  | 2016-04-30 | 2016-08-24 |  |  |  |  |  |
| C-ELV-CS-2855 |  | Installation of CS first fix (Conduits, Boxes within block work, Gypsum Boards & Raised FLooring at TR level | 20d | 2016-04-30 | 2016-05-22 | C-F-P-3453, C-F-P-3443 | 37d | 0d | 27,356.12 | GEN |
| C-ELV-CS-2895 |  | Installation of Cable Trays & Truncking at TR level | 25d | 2016-05-03 | 2016-05-31 | C-MEP-E-3466 SS | 18d | 0d | 2,769.38 |  |
| C-ELV-CS-2865 |  | Installation of second fix (Cabling & Wirring etc..) at TR level | 25d | 2016-06-01 | 2016-06-29 | C-ELV-CS-2855, C-ELV-CS-2895 | 29d | 0d | 82,068.35 | GEN |
| C-ELV-CS-2875 |  | Installation & Connection of Wireless Access points & IP dect phone & RJ 45 at TR level | 25d | 2016-06-30 | 2016-08-01 | C-ELV-CS-2865 | 29d | 0d | 93,342.54 | GEN |
| C-ELV-CS-2885 |  | Installtion & Connection of Controller & Instrumentation at TR level | 20d | 2016-08-02 | 2016-08-24 | C-ELV-CS-2875 | 152d | 102d | 223,314.69 |  |
|  | 4 | **IP, SMATV & QAM Television System** |  | 2016-04-30 | 2016-09-04 |  |  |  |  |  |
| C-ELV-SMATV-2855 |  | Installation of SMATV first Fix Conduits, Boxes within block work , Gypsum Boards & Raised FLooring at TR level | 20d | 2016-04-30 | 2016-05-22 | C-F-P-3453, C-F-P-3443 | 53d | 0d | 4,452.18 | GEN |
| C-ELV-SMATV-2895 |  | Installation of Cable Trays & Truncking at TR level | 25d | 2016-06-01 | 2016-06-29 | C-ELV-CCTV-2895 SS+5d | 18d | 0d | 2,769.38 |  |
| C-ELV-SMATV-2865 |  | Installation of second fix (Cabling & Wirring etc..) at TR level | 16d | 2016-06-30 | 2016-07-21 | C-ELV-SMATV-2855, C-ELV-SMATV-2895 | 20d | 0d | 10,388.41 | GEN |
| C-ELV-SMATV-2875 |  | Installation & Connection of Outlets, switches and splitter at TR level | 18d | 2016-07-23 | 2016-08-11 | C-ELV-SMATV-2865 | 20d | 0d | 6,537.45 | GEN |
| C-ELV-SMATV-2885 |  | Installtion & Connection of SMATV & QAM fiber & receiver at TR level | 20d | 2016-08-13 | 2016-09-04 | C-ELV-SMATV-2875 | 143d | 93d | 2,419.21 |  |
|  | 5 | **BMS system** |  | 2016-04-30 | 2016-09-06 |  |  |  |  |  |
| C-MEP-BMS-3085 |  | Installation of BMS first Fix Conduits, Boxes within block work , Gypsum Boards & Raised FLooring at TR level | 20d | 2016-04-30 | 2016-05-22 | C-F-P-3453, C-F-P-3443 | 51d | 0d | 8,895.95 | GEN |
| C-MEP-BMS-3125 |  | Installation of Cable trays & Trunking at TR level | 20d | 2016-06-07 | 2016-06-29 | C-ELV-SMATV-2895 SS+5d | 18d | 0d |  |  |
| C-MEP-BMS-3095 |  | Installation of BMS Cabling & Wirring at TR level | 16d | 2016-06-30 | 2016-07-21 | C-MEP-BMS-3085, C-MEP-BMS-3125 | 18d | 0d | 11,861.27 | GEN |
| C-MEP-BMS-3105 |  | Installation & Connection of BMS Sensors, Relays, & Valves at TR level | 20d | 2016-07-23 | 2016-08-14 | C-MEP-BMS-3095, C-MEP-PD-2885, C-MEP-PD-2875, C-MEP-FF-2294, C-MEP-AC-4628, C-MEP-AC-4608, C-MEP-AC-4618 | 18d | 0d | 14,826.58 | GEN |
| C-MEP-BMS-3115 |  | Installtion & Connection of BMS Racks, Panels etc... at TR level | 20d | 2016-08-15 | 2016-09-06 | C-MEP-BMS-3105 | 176d | 91d | 14,826.58 |  |

Notes:
- C-ELV-CCTV-2855: Expenses: 1 8161.35
- C-ELV-CCTV-2895: Expenses: 1 2769.38
- C-ELV-CCTV-2865: Expenses: 1 19043.1
- C-ELV-CCTV-2885: Expenses: 1 7322.52
- C-ELV-CCTV-2875: Expenses: 1 183699
- C-ELV-CS-2855: Expenses: 1 27356.1
- C-ELV-CS-2895: Expenses: 1 2769.38
- C-ELV-CS-2865: Expenses: 1 82068.4
- C-ELV-CS-2875: Expenses: 1 93342.5
- C-ELV-CS-2885: Expenses: 1 223315
- C-ELV-SMATV-2855: Expenses: 1 4452.18
- C-ELV-SMATV-2895: Expenses: 1 2769.38
- C-ELV-SMATV-2865: Expenses: 1 10388.4
- C-ELV-SMATV-2875: Expenses: 1 6537.45
- C-ELV-SMATV-2885: Expenses: 1 2419.21
- C-MEP-BMS-3085: Expenses: 1 8895.95
- C-MEP-BMS-3095: Expenses: 1 11861.3
- C-MEP-BMS-3105: Expenses: 1 14826.6
- C-MEP-BMS-3115: Expenses: 1 14826.6

| ID | WBS | Activity | Duration | Start | Finish | Predecessors | Total float | Free float |
| --- | --- | --- | --- | --- | --- | --- | --- | --- |
|  | 11 | **Connections & Pre-testing of Utilities within the floor to the Risers /Shafts** |  | 2016-01-25 | 2017-03-21 |  |  |  |
|  | 54 | **Ground Level- Utilities Connections & Pre-testing** |  | 2016-04-16 | 2016-10-17 |  |  |  |
| A1380 |  | Plumbing & Drainage Connections & Pre-testing - Floor Services to Risers at Ground Level | 5d | 2016-04-16 | 2016-04-20 | C-PD-SR-B3G-1301, C-PD-SR-B3G-1311, C-PW-CT-001, C-D-CT-001, C-MEP-PD-35, C-MEP-PD-25 | 114d | 0d |
| A1360 |  | Electrical Connection & Pre-testing - Floor Services to Risers at Ground Level | 16d | 2016-04-24 | 2016-05-11 | C-E-CT-001, C-MEP-E-26, C-MEP-E-16, C-E-SR-B3G-13, C-E-SR-B3G-23, A5210 | 12d | 0d |
| A1370 |  | HVAC Connection & Pre-testing - Floor Services to Risers at Ground Level | 16d | 2016-07-03 | 2016-07-24 | C-HVAC-SR-B3G-64, C-HVAC-SR-B3G-44, C-HVAC-CT-001, C-MEP-AC-18, C-MEP-AC-38, C-MEP-AC-68, A5220 | 61d | 0d |
| A10400 |  | Gas Connection & Pre-testing - Floor Services to Risers at Ground Level | 16d | 2016-07-26 | 2016-08-13 | C-MEP-Gas-1912, C-MEP-Gas-2885, C-UR-PR-3241, C-UR-PR-3271, A10490 | 81d | 7d |
| A1400 |  | Fire Fighting Connection & Pre-testing - Floor Services to Risers at Ground Level | 16d | 2016-08-24 | 2016-09-14 | C-MEP-FF-34, C-FF-SR-B3G-1291, C-FF-SR-B3G-1281, C-FF-CT-001, C-UR-PR-3021, A5250 | 56d | 0d |
| A1410 |  | ELV Connection & Pre-testing - Floor Services to Risers at Ground Level | 16d | 2016-09-21 | 2016-10-10 | C-ELV-SMATV-35, C-ELV-CCTV-35, C-ELV-FA-35, C-ELV-MSPA-35, C-ELV-RMS-35, C-ELV-CS-35, C-ELV-SR-B3G-1512, C-ELV-CT-001, C-UR-PR-2931, C-UR-PR-3101, C-UR-PR-2881, C-UR-PR-2841 | 105d | 0d |
| A1390 |  | BMS Connection & Pre-testing - Floor Services to Risers at Ground Level | 16d | 2016-09-29 | 2016-10-17 | C-MEP-BMS-35, C-MEP-BMS-25, C-BMS-CT-001 SS+8d, C-UR-PR-2981, C-ELV-SR-B3G-1712 | 93d | 0d |
|  | 52 | **Ground Mezzanine Level - Utilities Connections & Pre-testing** |  | 2016-01-25 | 2016-10-17 |  |  |  |
| A1780 |  | Electrical Connection & Pre-testing - Floor Services to Risers at Ground Mezzanine Level | 16d | 2016-01-25 | 2016-02-13 | C-MEP-E-386, C-E-SR-B3G-13, C-E-SR-B3G-23, C-E-CT-001 | 40d | 4d |
| A1800 |  | Plumbing & Drainage Connection & Pre-testing - Floor Services to Risers at Ground Mezzanine Level | 16d | 2016-04-16 | 2016-05-03 | C-PD-SR-B3G-1301, C-PD-SR-B3G-1311, C-PW-CT-001, C-D-CT-001, C-MEP-PD-335, C-MEP-PD-325 | 103d | 7d |
| A1790 |  | HVAC Connection & Pre-testing - Floor Services to Risers at Ground Mezzanine Level | 16d | 2016-05-08 | 2016-05-25 | C-HVAC-SR-B3G-44, C-HVAC-SR-B3G-64, C-HVAC-CT-001, C-MEP-AC-548, C-MEP-AC-498, C-MEP-AC-518 | 109d | 0d |
| A1820 |  | Fire Fighting Connection & Pre-testing - Floor Services to Risers at Ground Mezzanine Level | 16d | 2016-06-26 | 2016-07-17 | C-MEP-FF-274, C-FF-SR-B3G-1281, C-FF-SR-B3G-1291, C-FF-CT-001, C-UR-PR-3021 | 100d | 0d |
| A1830 |  | ELV connection & Pre-testing - FLoor services to Risers at Ground Mezzanine Level | 16d | 2016-09-21 | 2016-10-10 | C-ELV-SMATV-335, C-ELV-CCTV-335, C-ELV-FA-335, C-ELV-MSPA-335, C-ELV-RMS-335, C-ELV-CS-335, C-ELV-SR-B3G-1512, C-ELV-CT-001, C-UR-PR-2841, C-UR-PR-2881, C-UR-PR-2931, C-UR-PR-3101 | 121d | 0d |
| A1810 |  | BMS Connection & Pre-testing - Floor Services to Risers at Ground Mezzanine Level | 16d | 2016-09-29 | 2016-10-17 | C-MEP-BMS-335, C-MEP-BMS-325, C-UR-PR-2981, C-BMS-CT-001, C-ELV-SR-B3G-1712 | 93d | 0d |
|  | 51 | **Level 1 - Utilities Connections & Pre-testing** |  | 2016-01-25 | 2016-10-17 |  |  |  |
| A1430 |  | Electrical Connection & Pre-testing - Floor Services to Risers at Level 1 | 16d | 2016-01-25 | 2016-02-13 | C-MEP-E-86, C-E-SR-B3G-23, C-E-SR-B3G-13, C-MEP-E-76, C-E-CT-001 | 136d | 20d |
| A1450 |  | Plumbing & Drainage Connection & Pre-testing - Floor Services to Risers at Level 1 | 16d | 2016-04-16 | 2016-05-03 | C-PD-SR-B3G-1301, C-PD-SR-B3G-1311, C-D-CT-001, C-PW-CT-001 | 103d | 7d |
| A1440 |  | HVAC Connection & Pre-testing - Floor Services to Risers at Level 1 | 16d | 2016-05-08 | 2016-05-25 | C-HVAC-SR-B3G-44, C-HVAC-SR-B3G-64, C-HVAC-CT-001, C-MEP-AC-118, C-MEP-AC-98, C-MEP-AC-148 | 109d | 0d |
| A1470 |  | Fire Fighting Connection & Pre-testing - Floor Services to Risers at Level 1 | 16d | 2016-06-26 | 2016-07-17 | C-MEP-FF-74, C-FF-SR-B3G-1281, C-FF-CT-001, C-UR-PR-3021, C-FF-SR-B3G-1291 | 100d | 0d |
| A10410 |  | Gas Connection & Pre-testing - Floor Services to Risers at Level 1 | 16d | 2016-08-22 | 2016-09-08 | C-MEP-Gas-1912, C-MEP-Gas-2905, C-UR-PR-3271, A10400 | 86d | 2d |
| A1480 |  | ELV connection & Pre-testing - FLoor services to Risers at Level 1 | 16d | 2016-09-21 | 2016-10-10 | C-ELV-SMATV-85, C-ELV-CCTV-85, C-ELV-FA-85, C-ELV-MSPA-85, C-ELV-RMS-85, C-ELV-CS-85, C-ELV-SR-B3G-1512, C-ELV-CT-001, C-UR-PR-2841, C-UR-PR-2881, C-UR-PR-2931, C-UR-PR-3101 | 105d | 0d |
| A1460 |  | BMS Connection & Pre-testing - Floor Services to Risers at Level 1 | 16d | 2016-09-29 | 2016-10-17 | C-MEP-BMS-85, C-MEP-BMS-75, C-UR-PR-2981, C-BMS-CT-001 SS+8d, C-ELV-SR-B3G-1712 | 93d | 0d |

| ID | WBS | Activity | Duration | Start | Finish | Predecessors | Total float | Free float |
| --- | --- | --- | --- | --- | --- | --- | --- | --- |
|  | 50 | **Mezzanine Level 1 - Utilities Connections & Pre-testing** |  | 2016-01-25 | 2016-10-17 |  |  |  |
| A1500 |  | Electrical Connection & Pre-testing - Floor Services to Risers at Level 1 Mezz | 16d | 2016-01-25 | 2016-02-13 | C-MEP-E-146, C-E-SR-B3G-13, C-E-SR-B3G-23, C-MEP-E-136, C-E-CT-001 | 42d | 4d |
| A1520 |  | Plumbing & Drainage Connection & Pre-testing - Floor Services to Risers at Level 1 Mezz | 16d | 2016-04-16 | 2016-05-03 | C-PD-SR-B3G-1301, C-PD-SR-B3G-1311, C-PW-CT-001, C-D-CT-001 | 103d | 7d |
| A1510 |  | HVAC Connection & Pre-testing - Floor Services to Risers at Level 1 Mezz | 16d | 2016-05-05 | 2016-05-23 | C-HVAC-SR-B3G-44, C-HVAC-SR-B3G-64, C-MEP-AC-198, C-MEP-AC-178, C-MEP-AC-228 | 111d | 0d |
| A1540 |  | Fire Fighting Connection & Pre-testing - Floor Services to Risers at Level 1 Mezz | 16d | 2016-06-26 | 2016-07-17 | C-MEP-FF-114, C-FF-SR-B3G-1281, C-FF-SR-B3G-1291, C-FF-CT-001, C-UR-PR-3021, C-FF-SR-B3G-1291 FF | 100d | 0d |
| A1550 |  | ELV connection & Pre-testing - FLoor services to Risers at Level 1 Mezz | 16d | 2016-09-21 | 2016-10-10 | C-ELV-SMATV-135, C-ELV-CCTV-135, C-ELV-FA-135, C-ELV-MSPA-135, C-ELV-RMS-135, C-ELV-CS-135, C-ELV-SR-B3G-1512, C-ELV-CT-001, C-UR-PR-2841, C-UR-PR-2881, C-UR-PR-2931, C-UR-PR-3101 | 105d | 0d |
| A1530 |  | BMS Connection & Pre-testing - Floor Services to Risers at Level 1 Mezz | 16d | 2016-09-29 | 2016-10-17 | C-MEP-BMS-135, C-UR-PR-2981, C-BMS-CT-001 SS+8d, C-ELV-SR-B3G-1712 | 93d | 0d |
|  | 28 | **Level 2 - Utilities Connections & Pre-testing** |  | 2016-01-25 | 2016-10-17 |  |  |  |
| A1640 |  | Electrical Connection & Pre-testing - Floor Services to Risers at Level 2 | 16d | 2016-01-25 | 2016-02-13 | C-MEP-E-266, C-E-SR-B3G-13, C-E-SR-B3G-23, C-E-CT-001 SS | 136d | 20d |
| A1660 |  | Plumbing & Drainage Connection & Pre-testing - Floor Services to Risers at Level 2 | 16d | 2016-04-16 | 2016-05-03 | C-PD-SR-B3G-1301, C-PD-SR-B3G-1311, C-PW-CT-001, C-D-CT-001 | 103d | 7d |
| A1650 |  | HVAC Connection & Pre-testing - Floor Services to Risers at Level 2 | 16d | 2016-05-08 | 2016-05-25 | C-HVAC-SR-B3G-64, C-HVAC-CT-001, C-MEP-AC-358, C-MEP-AC-388, C-MEP-AC-338 | 109d | 0d |
| A1680 |  | Fire Fighting Connection & Pre-testing - Floor Services to Risers at Level 2 | 16d | 2016-06-26 | 2016-07-17 | C-MEP-FF-194, C-FF-SR-B3G-1281, C-FF-SR-B3G-1291, C-FF-CT-001, C-UR-PR-3021, C-FF-SR-B3G-1291 FF | 100d | 0d |
| A1690 |  | ELV connection & Pre-testing - FLoor services to Risers at Level 2 | 16d | 2016-09-21 | 2016-10-10 | C-ELV-SMATV-235, C-ELV-CCTV-235, C-ELV-FA-235, C-ELV-MSPA-235, C-ELV-RMS-235, C-ELV-CS-235, C-ELV-SR-B3G-1512, C-ELV-CT-001, C-UR-PR-2841, C-UR-PR-2881, C-UR-PR-2931, C-UR-PR-3101 | 89d | 0d |
| A1670 |  | BMS Connection & Pre-testing - Floor Services to Risers at Level 2 | 16d | 2016-09-29 | 2016-10-17 | C-MEP-BMS-235, C-UR-PR-2981, C-BMS-CT-001 SS+8d, C-ELV-SR-B3G-1712 | 93d | 0d |
|  | 27 | **Level 3 - Utilities Connections & Pre-testing** |  | 2016-01-25 | 2016-10-30 |  |  |  |
| A1290 |  | Electrical Connection & Pre-testing - Floor Services to Risers at Level 3 | 16d | 2016-01-25 | 2016-02-13 | C-MEP-E-004, C-E-SR-B3G-13, C-E-SR-B3G-23, C-E-CT-001 | 122d | 20d |
| A1310 |  | Plumbing & Drainage Connection & Pre-testing - Floor Services to Risers at Level 3 | 16d | 2016-04-16 | 2016-05-03 | C-PD-SR-B3G-1301, C-PD-SR-B3G-1311, C-D-CT-001, C-PW-CT-001, C-MEP-PD-2935, C-MEP-PD-2945 | 119d | 7d |
| A1300 |  | HVAC Connection & Pre-testing - Floor Services to Risers at Level 3 | 16d | 2016-05-08 | 2016-05-25 | C-HVAC-SR-B3G-44, C-HVAC-SR-B3G-64, C-HVAC-CT-001, C-MEP-AC-007, C-MEP-AC-005, C-MEP-AC-003 | 109d | 0d |
| A1330 |  | Fire Fighting Connection & Pre-testing - Floor Services to Risers at Level 3 | 16d | 2016-06-26 | 2016-07-17 | C-MEP-FF-004, C-FF-SR-B3G-1281, C-FF-SR-B3G-1291, C-FF-CT-001, C-UR-PR-3021, C-FF-SR-B3G-1291 FF | 100d | 0d |
| A1340 |  | ELV connection & Pre-testing - FLoor services to Risers at Level 3 | 16d | 2016-09-21 | 2016-10-10 | C-ELV-SMATV-005, C-ELV-CCTV-005, C-ELV-FA-005, C-ELV-MSPA-005, C-ELV-RMS-005, C-ELV-CS-005, C-ELV-SR-B3G-1512, C-ELV-CT-001, C-UR-PR-2841, C-UR-PR-2881, C-UR-PR-2931, C-UR-PR-3101 | 89d | 0d |
| A1320 |  | BMS Connection & Pre-testing - Floor Services to Risers at Level 3 | 16d | 2016-09-29 | 2016-10-17 | C-MEP-BMS-005, C-UR-PR-2981, C-BMS-CT-001 SS+8d, C-ELV-SR-B3G-1712 | 93d | 0d |
| A10420 |  | Gas Connection & Pre-testing - Floor Services to Risers at Level 3 | 16d | 2016-10-12 | 2016-10-30 | C-MEP-Gas-1912, C-MEP-Gas-2925, A10410 | 62d | 0d |
|  | 26 | **Level 4 - Utilities Connections & Pre-testing** |  | 2016-01-25 | 2016-10-17 |  |  |  |
| A1570 |  | Electrical Connection & Pre-testing - Floor Services to Risers at Level 4 | 16d | 2016-01-25 | 2016-02-13 | C-MEP-E-206, C-E-SR-B3G-13, C-E-SR-B3G-23, C-E-CT-001 | 56d | 4d |
| A1590 |  | Plumbing & Drainage Connection & Pre-testing - Floor Services to Risers at Level 4 | 16d | 2016-04-16 | 2016-05-03 | C-PD-SR-B3G-1301, C-PD-SR-B3G-1311, C-PW-CT-001, C-D-CT-001 | 119d | 7d |
| A1580 |  | HVAC Connection & Pre-testing - Floor Services to Risers at Level 4 | 16d | 2016-05-08 | 2016-05-25 | C-HVAC-SR-B3G-44, C-HVAC-SR-B3G-64, C-MEP-AC-278, C-MEP-AC-258, C-MEP-AC-308, C-HVAC-CT-001 | 125d | 18d |
| A1610 |  | Fire Fighting Connection & Pre-testing - Floor Services to Risers at Level 4 | 16d | 2016-06-26 | 2016-07-17 | C-MEP-FF-154, C-FF-SR-B3G-1281, C-FF-SR-B3G-1291, C-FF-CT-001, C-UR-PR-3021 | 113d | 0d |
| A1620 |  | ELV connection & Pre-testing - FLoor services to Risers at Level 4 | 16d | 2016-09-21 | 2016-10-10 | C-ELV-SMATV-185, C-ELV-CCTV-185, C-ELV-FA-185, C-ELV-MSPA-185, C-ELV-RMS-185, C-ELV-CS-185, C-ELV-SR-B3G-1512, C-ELV-CT-001, C-UR-PR-2841, C-UR-PR-2881, C-UR-PR-2931, C-UR-PR-3101 | 105d | 0d |
| A1600 |  | BMS Connection & Pre-testing - Floor Services to Risers at Level 4 | 16d | 2016-09-29 | 2016-10-17 | C-MEP-BMS-185, C-UR-PR-2981, C-BMS-CT-001 SS+8d, C-ELV-SR-B3G-1712 | 93d | 0d |

| ID | WBS | Activity | Duration | Start | Finish | Predecessors | Total float | Free float |
| --- | --- | --- | --- | --- | --- | --- | --- | --- |
|  | 25 | **Level 5 - Utilities Connections & Pre-testing** |  | 2016-01-25 | 2016-10-17 |  |  |  |
| A1710 |  | Electrical Connection & Pre-testing - Floor Services to Risers at Level 5 | 16d | 2016-01-25 | 2016-02-13 | C-MEP-E-326, C-E-SR-B3G-13, C-E-SR-B3G-23, C-E-CT-001 | 56d | 4d |
| A1730 |  | Plumbing & Drainage Connection & Pre-testing - Floor Services to Risers at Level 5 | 16d | 2016-04-21 | 2016-05-09 | C-PD-SR-B3G-1301, C-PD-SR-B3G-1311, A1380, C-MEP-PD-285, C-MEP-PD-275 | 114d | 25d |
| A1720 |  | HVAC Connection & Pre-testing - Floor Services to Risers at Level 5 | 16d | 2016-05-08 | 2016-05-25 | C-HVAC-SR-B3G-44, C-HVAC-SR-B3G-64, C-MEP-AC-438, C-MEP-AC-468, C-MEP-AC-418, C-HVAC-CT-001 | 125d | 18d |
| A1750 |  | Fire Fighting Connection & Pre-testing - Floor Services to Risers at Level 5 | 16d | 2016-06-26 | 2016-07-17 | C-MEP-FF-234, C-FF-SR-B3G-1281, C-FF-SR-B3G-1291, C-FF-CT-001, C-UR-PR-3021 | 113d | 0d |
| A1760 |  | ELV connection & Pre-testing - FLoor services to Risers at Level 5 | 16d | 2016-09-21 | 2016-10-10 | C-ELV-SMATV-285, C-ELV-CCTV-285, C-ELV-FA-285, C-ELV-MSPA-285, C-ELV-RMS-285, C-ELV-CS-285, C-ELV-SR-B3G-1512, C-ELV-CT-001, C-UR-PR-2841, C-UR-PR-2881, C-UR-PR-2931, C-UR-PR-3101 | 105d | 0d |
| A1740 |  | BMS Connection & Pre-testing - Floor Services to Risers at Level 5 | 16d | 2016-09-29 | 2016-10-17 | C-MEP-BMS-285, C-UR-PR-2981, C-BMS-CT-001 SS+8d, C-ELV-SR-B3G-1712 | 93d | 0d |
|  | 24 | **Level 6- Utilities Connections & Pre-testing** |  | 2016-04-24 | 2016-10-26 |  |  |  |
| A1920 |  | Electrical Connection & Pre-testing - Floor Services to Risers at Level 6 | 16d | 2016-04-24 | 2016-05-11 | C-MEP-E-506, C-E-SR-B3G-43, C-E-SR-B3G-53, A1360 SS | 12d | 0d |
| A1940 |  | Plumbing & Drainage Connection & Pre-testing - Floor Services to Risers at Level 6 | 16d | 2016-05-12 | 2016-05-30 | C-PD-SR-B3G-1341, C-PD-SR-B3G-1351, A1800, C-MEP-PD-425, C-MEP-PD-435 | 96d | 7d |
| A1930 |  | HVAC Connection & Pre-testing - Floor Services to Risers at Level 6 | 16d | 2016-07-25 | 2016-08-11 | C-HVAC-SR-B3G-104, C-HVAC-SR-B3G-124, C-MEP-AC-708, C-MEP-AC-658, C-MEP-AC-678, A1370 | 61d | 0d |
| A1960 |  | Fire Fighting Connection & Pre-testing - Floor Services to Risers at Level 6 | 16d | 2016-09-15 | 2016-10-04 | C-MEP-FF-354, C-FF-SR-B3G-1321, C-FF-SR-B3G-1311, A1400 | 65d | 0d |
| A1970 |  | ELV connection & Pre-testing - FLoor services to Risers at Level 6 | 16d | 2016-09-21 | 2016-10-10 | C-ELV-SMATV-435, C-ELV-CCTV-435, C-ELV-FA-435, C-ELV-MSPA-435, C-ELV-RMS-435, C-ELV-CS-435, C-ELV-SR-B3G-1532, A1410 SS | 105d | 0d |
| A1950 |  | BMS Connection & Pre-testing - Floor Services to Risers at Level 6 | 16d | 2016-10-09 | 2016-10-26 | C-MEP-BMS-435, A1390 SS+8d, C-ELV-SR-B3G-1732 | 93d | 0d |
|  | 23 | **Level 7- Utilities Connections & Pre-testing** |  | 2016-02-18 | 2016-10-29 |  |  |  |
| A2340 |  | Electrical Connection & Pre-testing - Floor Services to Risers at Level 7 | 16d | 2016-02-18 | 2016-03-07 | C-MEP-E-866, C-E-SR-B3G-43, C-E-SR-B3G-53, A1780 | 36d | 0d |
| A2360 |  | Plumbing & Drainage Connection & Pre-testing - Floor Services to Risers at Level 7 | 16d | 2016-05-12 | 2016-05-30 | C-PD-SR-B3G-1341, C-PD-SR-B3G-1351, A1450, C-MEP-PD-735, C-MEP-PD-725 | 96d | 7d |
| A2350 |  | HVAC Connection & Pre-testing - Floor Services to Risers at Level 7 | 16d | 2016-05-26 | 2016-06-13 | C-HVAC-SR-B3G-104, C-HVAC-SR-B3G-124, C-MEP-AC-1158, C-MEP-AC-1138, C-MEP-AC-1188, A1790 | 109d | 2d |
| A2380 |  | Fire Fighting Connection & Pre-testing - Floor Services to Risers at Level 7 | 16d | 2016-07-18 | 2016-08-04 | C-MEP-FF-594, C-FF-SR-B3G-1321, C-FF-SR-B3G-1311, A1820 | 100d | 0d |
| A2370 |  | BMS Connection & Pre-testing - Floor Services to Risers at Level 7 | 16d | 2016-10-09 | 2016-10-26 | C-MEP-BMS-735, A1810 SS+8d, C-ELV-SR-B3G-1732 | 93d | 0d |
| A2390 |  | ELV connection & Pre-testing - FLoor services to Risers at Level 7 | 16d | 2016-10-11 | 2016-10-29 | C-ELV-SMATV-735, C-ELV-CCTV-735, C-ELV-FA-735, C-ELV-MSPA-735, C-ELV-RMS-735, C-ELV-CS-735, C-ELV-SR-B3G-1532, A1830 | 121d | 0d |
|  | 22 | **Level 8- Utilities Connections & Pre-testing** |  | 2016-02-18 | 2016-10-29 |  |  |  |
| A1990 |  | Electrical Connection & Pre-testing - Floor Services to Risers at Level 8 | 16d | 2016-02-18 | 2016-03-07 | C-MEP-E-566, C-E-SR-B3G-43, C-E-SR-B3G-53, A1430 SS | 116d | 0d |
| A2010 |  | Plumbing & Drainage Connection & Pre-testing - Floor Services to Risers at Level 8 | 16d | 2016-05-12 | 2016-05-30 | C-PD-SR-B3G-1341, C-PD-SR-B3G-1351, A1520, C-MEP-PD-485, C-MEP-PD-475 | 96d | 7d |
| A2000 |  | HVAC Connection & Pre-testing - Floor Services to Risers at Level 8 | 16d | 2016-05-26 | 2016-06-13 | C-HVAC-SR-B3G-104, C-HVAC-SR-B3G-124, C-MEP-AC-758, C-MEP-AC-738, C-MEP-AC-788, A1440 | 109d | 2d |
| A2030 |  | Fire Fighting Connection & Pre-testing - Floor Services to Risers at Level 8 | 16d | 2016-07-18 | 2016-08-04 | C-MEP-FF-394, C-FF-SR-B3G-1321, C-FF-SR-B3G-1311, A1470 | 100d | 0d |
| A2020 |  | BMS Connection & Pre-testing - Floor Services to Risers at Level 8 | 16d | 2016-10-09 | 2016-10-26 | C-MEP-BMS-485, A1460 SS+8d, C-ELV-SR-B3G-1732 | 93d | 0d |
| A2040 |  | ELV connection & Pre-testing - FLoor services to Risers at Level 8 | 16d | 2016-10-11 | 2016-10-29 | C-ELV-SMATV-485, C-ELV-CCTV-485, C-ELV-FA-485, C-ELV-MSPA-485, C-ELV-RMS-485, C-ELV-CS-485, C-ELV-SR-B3G-1532, A1480 | 105d | 0d |

| ID | WBS | Activity | Duration | Start | Finish | Predecessors | Total float | Free float |
| --- | --- | --- | --- | --- | --- | --- | --- | --- |
|  | 21 | **Level 9 - Utilities Connections & Pre-testing** |  | 2016-02-18 | 2016-10-29 |  |  |  |
| A2060 |  | Electrical Connection & Pre-testing - Floor Services to Risers at Level 9 | 16d | 2016-02-18 | 2016-03-07 | C-MEP-E-626, C-E-SR-B3G-43, C-E-SR-B3G-53, A1500 | 38d | 0d |
| A2080 |  | Plumbing & Drainage Connection & Pre-testing - Floor Services to Risers at Level 9 | 16d | 2016-05-12 | 2016-05-30 | C-PD-SR-B3G-1341, C-PD-SR-B3G-1351, A1660, C-MEP-PD-525, C-MEP-PD-535 | 96d | 7d |
| A2070 |  | HVAC Connection & Pre-testing - Floor Services to Risers at Level 9 | 16d | 2016-05-24 | 2016-06-11 | C-HVAC-SR-B3G-104, C-HVAC-SR-B3G-124, C-MEP-AC-838, C-MEP-AC-818, C-MEP-AC-868, A1510 | 111d | 4d |
| A2100 |  | Fire Fighting Connection & Pre-testing - Floor Services to Risers at Level 9 | 16d | 2016-07-18 | 2016-08-04 | C-MEP-FF-434, C-FF-SR-B3G-1321, C-FF-SR-B3G-1311, A1540 | 100d | 0d |
| A2090 |  | BMS Connection & Pre-testing - Floor Services to Risers at Level 9 | 16d | 2016-10-09 | 2016-10-26 | C-MEP-BMS-535, A1530 SS+8d, C-ELV-SR-B3G-1732 | 93d | 0d |
| A2110 |  | ELV connection & Pre-testing - FLoor services to Risers at Level 9 | 16d | 2016-10-11 | 2016-10-29 | C-ELV-SMATV-535, C-ELV-CCTV-535, C-ELV-FA-535, C-ELV-MSPA-535, C-ELV-RMS-535, C-ELV-CS-535, C-ELV-SR-B3G-1532, A1550 | 105d | 0d |
|  | 20 | **Level 10- Utilities Connections & Pre-testing** |  | 2016-02-18 | 2016-10-26 |  |  |  |
| A2200 |  | Electrical Connection & Pre-testing - Floor Services to Risers at Level 10 | 16d | 2016-02-18 | 2016-03-07 | C-MEP-E-746, C-E-SR-B3G-43, C-E-SR-B3G-53, A1640 SS | 116d | 0d |
| A2220 |  | Plumbing & Drainage Connection & Pre-testing - Floor Services to Risers at Level 10 | 16d | 2016-05-12 | 2016-05-30 | C-PD-SR-B3G-1341, C-PD-SR-B3G-1351, A1310, C-MEP-PD-635, C-MEP-PD-625 | 112d | 7d |
| A2210 |  | HVAC Connection & Pre-testing - Floor Services to Risers at Level 10 | 16d | 2016-05-26 | 2016-06-13 | C-HVAC-SR-B3G-104, C-HVAC-SR-B3G-124, C-MEP-AC-998, C-MEP-AC-978, C-MEP-AC-1028, A1650 | 109d | 25d |
| A2240 |  | Fire Fighting Connection & Pre-testing - Floor Services to Risers at Level 10 | 16d | 2016-07-18 | 2016-08-04 | C-MEP-FF-514, C-FF-SR-B3G-1321, C-FF-SR-B3G-1311, A1680 | 100d | 6d |
| A2250 |  | ELV connection & Pre-testing - FLoor services to Risers at Level 10 | 16d | 2016-09-21 | 2016-10-10 | C-ELV-SMATV-635, C-ELV-CCTV-635, C-ELV-FA-635, C-ELV-MSPA-635, C-ELV-RMS-635, C-ELV-CS-635, C-ELV-SR-B3G-1532, A1690 SS | 89d | 0d |
| A2230 |  | BMS Connection & Pre-testing - Floor Services to Risers at Level 10 | 16d | 2016-10-09 | 2016-10-26 | C-MEP-BMS-635, A1670 SS+8d, C-ELV-SR-B3G-1732 | 93d | 0d |
|  | 19 | **Level 11- Utilities Connections & Pre-testing** |  | 2016-02-18 | 2016-10-29 |  |  |  |
| A1850 |  | Electrical Connection & Pre-testing - Floor Services to Risers at Level 11 | 16d | 2016-02-18 | 2016-03-07 | C-MEP-E-446, C-E-SR-B3G-43, C-E-SR-B3G-53, A1290 SS | 102d | 0d |
| A1870 |  | Plumbing & Drainage Connection & Pre-testing - Floor Services to Risers at Level 11 | 16d | 2016-05-12 | 2016-05-30 | C-PD-SR-B3G-1341, C-PD-SR-B3G-1351, A1590, C-MEP-PD-385, C-MEP-PD-375 | 112d | 30d |
| A1860 |  | HVAC Connection & Pre-testing - Floor Services to Risers at Level 11 | 16d | 2016-05-26 | 2016-06-13 | C-HVAC-SR-B3G-104, C-HVAC-SR-B3G-124, C-MEP-AC-598, C-MEP-AC-578, C-MEP-AC-628, A1300 | 109d | 25d |
| A1890 |  | Fire Fighting Connection & Pre-testing - Floor Services to Risers at Level 11 | 16d | 2016-07-18 | 2016-08-04 | C-MEP-FF-314, C-FF-SR-B3G-1321, C-FF-SR-B3G-1311, A1330 | 100d | 6d |
| A1880 |  | BMS Connection & Pre-testing - Floor Services to Risers at Level 11 | 16d | 2016-10-09 | 2016-10-26 | C-MEP-BMS-385, A1320 SS+8d, C-ELV-SR-B3G-1732 | 93d | 0d |
| A1900 |  | ELV connection & Pre-testing - FLoor services to Risers at Level 11 | 16d | 2016-10-11 | 2016-10-29 | C-ELV-SMATV-385, C-ELV-CCTV-385, C-ELV-FA-385, C-ELV-MSPA-385, C-ELV-RMS-385, C-ELV-CS-385, C-ELV-SR-B3G-1532, A1340 | 89d | 0d |
|  | 18 | **Level 12- Utilities Connections & Pre-testing** |  | 2016-02-18 | 2016-10-29 |  |  |  |
| A2130 |  | Electrical Connection & Pre-testing - Floor Services to Risers at Level 12 | 16d | 2016-02-18 | 2016-03-07 | C-MEP-E-686, C-E-SR-B3G-73, C-E-SR-B3G-83, A1570 | 52d | 0d |
| A2150 |  | Plumbing & Drainage Connection & Pre-testing - Floor Services to Risers at Level 12 | 16d | 2016-06-08 | 2016-06-26 | C-PD-SR-B3G-1381, C-PD-SR-B3G-1391, A1730, C-MEP-PD-585, C-MEP-PD-575 | 89d | 7d |
| A2140 |  | HVAC Connection & Pre-testing - Floor Services to Risers at Level 12 | 16d | 2016-06-16 | 2016-07-04 | C-HVAC-SR-B3G-164, C-HVAC-SR-B3G-184, C-MEP-AC-918, C-MEP-AC-898, C-MEP-AC-948, A1580 | 107d | 7d |
| A2170 |  | Fire Fighting Connection & Pre-testing - Floor Services to Risers at Level 12 | 16d | 2016-07-18 | 2016-08-04 | C-MEP-FF-474, C-FF-SR-B3G-1351, C-FF-SR-B3G-1341, A1610 | 113d | 6d |
| A2160 |  | BMS Connection & Pre-testing - Floor Services to Risers at Level 12 | 16d | 2016-10-09 | 2016-10-26 | C-MEP-BMS-585, A1600 SS+8d, C-ELV-SR-B3G-1752 | 93d | 0d |
| A2180 |  | ELV connection & Pre-testing - FLoor services to Risers at Level 12 | 16d | 2016-10-11 | 2016-10-29 | C-ELV-SMATV-585, C-ELV-CCTV-585, C-ELV-FA-585, C-ELV-MSPA-585, C-ELV-RMS-585, C-ELV-CS-585, C-ELV-SR-B3G-1552, A1620 | 105d | 0d |

| ID | WBS | Activity | Duration | Start | Finish | Predecessors | Total float | Free float |
| --- | --- | --- | --- | --- | --- | --- | --- | --- |
|  | 17 | **Level 13- Utilities Connections & Pre-testing** |  | 2016-02-18 | 2016-10-29 |  |  |  |
| A2270 |  | Electrical Connection & Pre-testing - Floor Services to Risers at Level 13 | 16d | 2016-02-18 | 2016-03-07 | C-MEP-E-806, C-E-SR-B3G-73, C-E-SR-B3G-83, A1710 | 52d | 0d |
| A2290 |  | Plumbing & Drainage Connection & Pre-testing - Floor Services to Risers at Level 13 | 16d | 2016-06-08 | 2016-06-26 | C-PD-SR-B3G-1381, C-PD-SR-B3G-1391, A1940, C-MEP-PD-685, C-MEP-PD-675 | 89d | 7d |
| A2280 |  | HVAC Connection & Pre-testing - Floor Services to Risers at Level 13 | 16d | 2016-06-16 | 2016-07-04 | C-HVAC-SR-B3G-164, C-HVAC-SR-B3G-184, C-MEP-AC-1078, C-MEP-AC-1058, C-MEP-AC-1108, A1720 | 107d | 7d |
| A2310 |  | Fire Fighting Connection & Pre-testing - Floor Services to Risers at Level 13 | 16d | 2016-07-18 | 2016-08-04 | C-MEP-FF-554, C-FF-SR-B3G-1351, C-FF-SR-B3G-1341, A1750 | 113d | 6d |
| A2300 |  | BMS Connection & Pre-testing - Floor Services to Risers at Level 13 | 16d | 2016-10-09 | 2016-10-26 | C-MEP-BMS-685, A1740 SS+8d, C-ELV-SR-B3G-1752 | 93d | 0d |
| A2320 |  | ELV connection & Pre-testing - FLoor services to Risers at Level 13 | 16d | 2016-10-11 | 2016-10-29 | C-ELV-SMATV-685, C-ELV-CCTV-685, C-ELV-FA-685, C-ELV-MSPA-685, C-ELV-RMS-685, C-ELV-CS-685, C-ELV-SR-B3G-1552, A1760 | 105d | 0d |
|  | 16 | **Level 14 - Utilities Connections & Pre-testing** |  | 2016-04-24 | 2016-11-05 |  |  |  |
| A2480 |  | Electrical Connection & Pre-testing - Floor Services to Risers at Level 14 | 16d | 2016-04-24 | 2016-05-11 | C-MEP-E-986, C-E-SR-B3G-73, C-E-SR-B3G-83, A1920 SS | 12d | 0d |
| A2500 |  | Plumbing & Drainage Connection & Pre-testing - Floor Services to Risers at Level 14 | 16d | 2016-06-08 | 2016-06-26 | C-PD-SR-B3G-1381, C-PD-SR-B3G-1391, A2360, C-MEP-PD-835, C-MEP-PD-825 | 89d | 7d |
| A2490 |  | HVAC Connection & Pre-testing - Floor Services to Risers at Level 14 | 16d | 2016-08-13 | 2016-08-30 | C-HVAC-SR-B3G-164, C-HVAC-SR-B3G-184, C-MEP-AC-1318, C-MEP-AC-1298, C-MEP-AC-1348, A1930 | 61d | 0d |
| A2530 |  | ELV connection & Pre-testing - FLoor services to Risers at Level 14 | 16d | 2016-09-21 | 2016-10-10 | C-ELV-SMATV-835, C-ELV-CCTV-835, C-ELV-FA-835, C-ELV-MSPA-835, C-ELV-RMS-835, C-ELV-CS-835, C-ELV-SR-B3G-1552, A1970 SS | 105d | 0d |
| A2520 |  | Fire Fighting Connection & Pre-testing - Floor Services to Risers at Level 14 | 16d | 2016-10-05 | 2016-10-23 | C-MEP-FF-674, C-FF-SR-B3G-1351, C-FF-SR-B3G-1341, A1960 | 65d | 0d |
| A2510 |  | BMS Connection & Pre-testing - Floor Services to Risers at Level 14 | 16d | 2016-10-18 | 2016-11-05 | C-MEP-BMS-835, A1950 SS+8d, C-ELV-SR-B3G-1752 | 93d | 0d |
|  | 15 | **Level 15 - Utilities Connections & Pre-testing** |  | 2016-03-08 | 2016-11-05 |  |  |  |
| A2900 |  | Electrical Connection & Pre-testing - Floor Services to Risers at Level 15 | 16d | 2016-03-08 | 2016-03-26 | C-MEP-E-1346, C-E-SR-B3G-73, C-E-SR-B3G-83, A2340 | 36d | 0d |
| A2920 |  | Plumbing & Drainage Connection & Pre-testing - Floor Services to Risers at Level 15 | 16d | 2016-06-08 | 2016-06-26 | C-PD-SR-B3G-1381, C-PD-SR-B3G-1391, A2010, C-MEP-PD-1135, C-MEP-PD-1125 | 89d | 7d |
| A2910 |  | HVAC Connection & Pre-testing - Floor Services to Risers at Level 15 | 16d | 2016-06-16 | 2016-07-04 | C-HVAC-SR-B3G-164, C-HVAC-SR-B3G-184, C-MEP-AC-1798, C-MEP-AC-1778, C-MEP-AC-1828, A2350 | 107d | 7d |
| A2940 |  | Fire Fighting Connection & Pre-testing - Floor Services to Risers at Level 15 | 16d | 2016-08-06 | 2016-08-23 | C-MEP-FF-914, C-FF-SR-B3G-1351, C-FF-SR-B3G-1341, A2380 | 100d | 0d |
| A2950 |  | ELV connection & Pre-testing - FLoor services to Risers at Level 15 | 16d | 2016-10-11 | 2016-10-29 | C-ELV-SMATV-1135, C-ELV-CCTV-1135, C-ELV-FA-1135, C-ELV-MSPA-1135, C-ELV-RMS-1135, C-ELV-CS-1135, C-ELV-SR-B3G-1552, A2390 SS | 121d | 0d |
| A2930 |  | BMS Connection & Pre-testing - Floor Services to Risers at Level 15 | 16d | 2016-10-18 | 2016-11-05 | C-MEP-BMS-1135, A2370 SS+8d, C-ELV-SR-B3G-1752 | 93d | 0d |
|  | 14 | **Level 16 - Utilities Connections & Pre-testing** |  | 2016-02-18 | 2016-11-05 |  |  |  |
| A2620 |  | Electrical Connection & Pre-testing - Floor Services to Riser at Level 16 | 16d | 2016-02-18 | 2016-03-07 | C-MEP-E-1106, C-E-SR-B3G-73, C-E-SR-B3G-83, A1990 SS | 116d | 14d |
| A2640 |  | Plumbing & Drainage Connection & Pre-testing - Floor Services to Risers at Level 16 | 16d | 2016-06-08 | 2016-06-26 | C-PD-SR-B3G-1381, C-PD-SR-B3G-1391, A2080, C-MEP-PD-935, C-MEP-PD-925 | 89d | 7d |
| A2630 |  | HVAC Connection & Pre-testing - Floor Services to Risers at Level 16 | 16d | 2016-06-16 | 2016-07-04 | C-HVAC-SR-B3G-164, C-HVAC-SR-B3G-184, C-MEP-AC-1478, C-MEP-AC-1458, C-MEP-AC-1508, A2000 | 107d | 30d |
| A2660 |  | Fire Fighting Connection & Pre-testing - Floor Services to Risers at Level 16 | 16d | 2016-08-06 | 2016-08-23 | C-MEP-FF-754, C-FF-SR-B3G-1351, C-FF-SR-B3G-1341, A2030 | 100d | 15d |
| A2670 |  | ELV connection & Pre-testing - FLoor services to Risers at Level 16 | 16d | 2016-10-11 | 2016-10-29 | C-ELV-SMATV-935, C-ELV-CCTV-935, C-ELV-FA-935, C-ELV-MSPA-935, C-ELV-RMS-935, C-ELV-CS-935, C-ELV-SR-B3G-1552, A2040 SS | 105d | 0d |
| A2650 |  | BMS Connection & Pre-testing - Floor Services to Risers at Level 16 | 16d | 2016-10-18 | 2016-11-05 | C-MEP-BMS-935, A2020 SS+8d, C-ELV-SR-B3G-1752 | 93d | 0d |

| ID | WBS | Activity | Duration | Start | Finish | Predecessors | Total float | Free float |
| --- | --- | --- | --- | --- | --- | --- | --- | --- |
|  | 13 | **Level 17 - Utilities Connections & Pre-testing** |  | 2016-03-08 | 2016-11-05 |  |  |  |
| A2550 |  | Electrical Connection & Pre-testing - Floor Services to Risers at Level 17 | 16d | 2016-03-08 | 2016-03-26 | C-MEP-E-1046, C-E-SR-B3G-73, C-E-SR-B3G-83, A2060 | 38d | 0d |
| A2570 |  | Plumbing & Drainage Connection & Pre-testing - Floor Services to Risers at Level 17 | 16d | 2016-06-08 | 2016-06-26 | C-PD-SR-B3G-1381, C-PD-SR-B3G-1391, C-MEP-PD-885, C-MEP-PD-875, A2220, C-CS-S-T-441 | 105d | 30d |
| A2560 |  | HVAC Connection & Pre-testing - Floor Services to Risers at Level 17 | 16d | 2016-06-16 | 2016-07-04 | C-HVAC-SR-B3G-164, C-HVAC-SR-B3G-184, C-MEP-AC-1398, C-MEP-AC-1378, C-MEP-AC-1428, A2070 | 107d | 30d |
| A2590 |  | Fire Fighting Connection & Pre-testing - Floor Services to Risers at Level 17 | 16d | 2016-08-06 | 2016-08-23 | C-MEP-FF-714, C-FF-SR-B3G-1351, C-FF-SR-B3G-1341, A2100 | 100d | 15d |
| A2600 |  | ELV connection & Pre-testing - FLoor services to Risers at Level 17 | 16d | 2016-10-11 | 2016-10-29 | C-ELV-SMATV-885, C-ELV-CCTV-885, C-ELV-FA-885, C-ELV-MSPA-885, C-ELV-RMS-885, C-ELV-CS-885, C-ELV-SR-B3G-1552, A2110 SS | 105d | 0d |
| A2580 |  | BMS Connection & Pre-testing - Floor Services to Risers at Level 17 | 16d | 2016-10-18 | 2016-11-05 | C-MEP-BMS-885, A2090 SS+8d, C-ELV-SR-B3G-1752 | 93d | 0d |
|  | 12 | **Level 18- Utilities Connections & Pre-testing** |  | 2016-02-18 | 2016-11-05 |  |  |  |
| A2760 |  | Electrical Connection & Pre-testing - Floor Services to Risers at Level 18 | 16d | 2016-02-18 | 2016-03-07 | C-MEP-E-1226, C-E-SR-B3G-103, C-E-SR-B3G-113, A2200 SS | 116d | 14d |
| A2780 |  | Plumbing & Drainage Connection & Pre-testing - Floor Services to Risers at Level 18 | 16d | 2016-07-09 | 2016-07-26 | C-PD-SR-B3G-1421, C-PD-SR-B3G-1431, A1870, C-MEP-PD-1025, C-MEP-PD-1035 | 82d | 7d |
| A2770 |  | HVAC Connection & Pre-testing - Floor Services to Risers at Level 18 | 16d | 2016-07-17 | 2016-08-03 | C-HVAC-SR-B3G-224, C-HVAC-SR-B3G-244, C-MEP-AC-1638, C-MEP-AC-1618, C-MEP-AC-1668, A2210 | 84d | 7d |
| A2800 |  | Fire Fighting Connection & Pre-testing - Floor Services to Risers at Level 18 | 16d | 2016-08-13 | 2016-08-30 | C-MEP-FF-834, C-FF-SR-B3G-1381, C-FF-SR-B3G-1371, A2240 | 94d | 9d |
| A2810 |  | ELV connection & Pre-testing - FLoor services to Risers at Level 18 | 16d | 2016-09-21 | 2016-10-10 | C-ELV-SMATV-1035, C-ELV-CCTV-1035, C-ELV-FA-1035, C-ELV-MSPA-1035, C-ELV-RMS-1035, C-ELV-CS-1035, C-ELV-SR-B3G-1572, A2250 SS | 89d | 0d |
| A2790 |  | BMS Connection & Pre-testing - Floor Services to Risers at Level 18 | 16d | 2016-10-18 | 2016-11-05 | C-MEP-BMS-1035, A2230 SS+8d, C-ELV-SR-B3G-1772 | 93d | 0d |
|  | 11 | **Level 19 - Utilities Connections & Pre-testing** |  | 2016-02-18 | 2016-11-16 |  |  |  |
| A2410 |  | Electrical Connection & Pre-testing - Floor Services to Risers at Level 19 | 16d | 2016-02-18 | 2016-03-07 | C-MEP-E-926, C-E-SR-B3G-103, C-E-SR-B3G-113, A1850 SS | 102d | 14d |
| A2430 |  | Plumbing & Drainage Connection & Pre-testing - Floor Services to Risers at Level 19 | 16d | 2016-07-09 | 2016-07-26 | C-PD-SR-B3G-1421, C-PD-SR-B3G-1431, A2150, C-MEP-PD-785, C-MEP-PD-775 | 82d | 7d |
| A2420 |  | HVAC Connection & Pre-testing - Floor Services to Risers at Level 19 | 16d | 2016-07-17 | 2016-08-03 | C-HVAC-SR-B3G-224, C-HVAC-SR-B3G-244, C-MEP-AC-1238, C-MEP-AC-1218, C-MEP-AC-1268, A1860 | 84d | 7d |
| A2450 |  | Fire Fighting Connection & Pre-testing - Floor Services to Risers at Level 19 | 16d | 2016-08-13 | 2016-08-30 | C-MEP-FF-634, C-FF-SR-B3G-1381, C-FF-SR-B3G-1371, A1890 | 94d | 9d |
| A2440 |  | BMS Connection & Pre-testing - Floor Services to Risers at Level 19 | 16d | 2016-10-18 | 2016-11-05 | C-MEP-BMS-785, A1880 SS+8d, C-ELV-SR-B3G-1772 | 93d | 0d |
| A2460 |  | ELV connection & Pre-testing - FLoor services to Risers at Level 19 | 16d | 2016-10-30 | 2016-11-16 | C-ELV-SMATV-785, C-ELV-CCTV-785, C-ELV-FA-785, C-ELV-MSPA-785, C-ELV-RMS-785, C-ELV-CS-785, C-ELV-SR-B3G-1572, A1900 | 89d | 0d |
|  | 10 | **Level 20 - Utilities Connections & Pre-testing** |  | 2016-03-08 | 2016-11-05 |  |  |  |
| A2690 |  | Electrical Connection & Pre-testing - Floor Services to Risers at Level 20 | 16d | 2016-03-08 | 2016-03-26 | C-MEP-E-1166, C-E-SR-B3G-103, C-E-SR-B3G-113, A2130 | 52d | 0d |
| A2710 |  | Plumbing & Drainage Connection & Pre-testing - Floor Services to Risers at Level 20 | 16d | 2016-07-09 | 2016-07-26 | C-PD-SR-B3G-1421, C-PD-SR-B3G-1431, A2290, C-MEP-PD-985, C-MEP-PD-975 | 82d | 7d |
| A2700 |  | HVAC Connection & Pre-testing - Floor Services to Risers at Level 20 | 16d | 2016-07-17 | 2016-08-03 | C-HVAC-SR-B3G-224, C-HVAC-SR-B3G-244, C-MEP-AC-1558, C-MEP-AC-1538, C-MEP-AC-1588, A2140 | 100d | 7d |
| A2730 |  | Fire Fighting Connection & Pre-testing - Floor Services to Risers at Level 20 | 16d | 2016-08-13 | 2016-08-30 | C-MEP-FF-794, C-FF-SR-B3G-1381, C-FF-SR-B3G-1371, A2170 | 107d | 9d |
| A2740 |  | ELV connection & Pre-testing - FLoor services to Risers at Level 20 | 16d | 2016-10-11 | 2016-10-29 | C-ELV-SMATV-985, C-ELV-CCTV-985, C-ELV-FA-985, C-ELV-MSPA-985, C-ELV-RMS-985, C-ELV-CS-985, C-ELV-SR-B3G-1572, A2180 SS | 105d | 0d |
| A2720 |  | BMS Connection & Pre-testing - Floor Services to Risers at Level 20 | 16d | 2016-10-18 | 2016-11-05 | C-MEP-BMS-985, A2160 SS+8d, C-ELV-SR-B3G-1772 | 93d | 0d |
