# EBIC Construction Forecast (27-Jan-07)

Schedule from Primavera P6, 2004-08-02 to 2009-04-14, data date 2007-01-27, A marks actual dates.
Must finish by 2009-04-27

## Calendars

- EBWK 5 Day HOC Holidays: Mon-Fri 08:00-12:00, 13:00-17:00; Sat-Sun off. Exceptions (off unless hours are given): 2005-05-30, 2005-07-01, 2005-07-04, 2005-12-26, 2006-01-02.
- EBWK 6 Day Egypt Holidays: Mon-Thu 08:00-12:00, 13:00-17:00; Fri off; Sat-Sun 08:00-12:00, 13:00-17:00. Exceptions (off unless hours are given): 2005-10-05, 2005-10-09, 2005-10-11, 2005-10-13, 2005-10-16, 2005-10-18, 2005-10-20, 2005-10-23, 2005-10-25, 2005-10-27, 2005-10-30, 2005-11-01, 2005-11-03, 2006-01-10 to 2006-01-12, 2006-09-24, 2006-09-26, 2006-09-28, 2006-10-01, 2006-10-03, 2006-10-05, 2006-10-08, 2006-10-10, 2006-10-12, 2006-10-15, 2006-10-17, 2006-10-19, 2006-10-21 to 2006-10-26, 2006-12-30 to 2007-01-04, 2007-09-13, 2007-09-16, 2007-09-18, 2007-09-20, 2007-09-23, 2007-09-25, 2007-09-27, 2007-09-30, 2007-10-02, 2007-10-04, 2007-10-07, 2007-10-09, 2007-10-11, 2007-10-13 to 2007-10-18, 2007-12-19 to 2007-12-20, 2007-12-22 to 2007-12-24.
- EBWK 5 Day MEC Holidays: Mon-Fri 08:00-12:00, 13:00-17:00; Sat-Sun off. Exceptions (off unless hours are given): 2005-09-16, 2005-11-02, 2005-12-12, 2005-12-26 to 2005-12-30, 2006-03-21, 2006-04-13 to 2006-04-14, 2006-05-01, 2006-11-02, 2006-11-20, 2006-12-12, 2006-12-25.
- EBWK - Global: Mon-Fri 08:00-12:00, 13:00-17:00; Sat-Sun off.
- EBWK 7 Day No Holidays: Mon-Sun 08:00-12:00, 13:00-17:00. Exceptions (off unless hours are given): 2005-07-12 08:00-12:00, 13:00-16:00.
- EBWK - 3 - 7 Day Work Week: Mon-Sun 08:00-12:00, 13:00-17:00.
- EBC4 - 3 - Seven-Day: Mon-Sun 08:00-12:00, 13:00-17:00.
- EB00 - 3 - 7 Day Work Week: Mon-Sun 08:00-12:00, 13:00-17:00.
- 1. Standard 5 Day Workweek: Mon-Fri 08:00-12:00, 13:00-17:00; Sat-Sun off.
- 2.a. 5 day w/US holidays: Mon-Fri 08:00-16:00; Sat-Sun off. Exceptions (off unless hours are given): 2004-09-06, 2004-11-25 to 2004-11-26, 2004-12-24, 2004-12-27 to 2004-12-30 08:00-16:00, 2004-12-31, 2005-05-30, 2005-07-04, 2005-09-05, 2005-11-24 to 2005-11-25, 2005-12-23, 2005-12-30.

## Resources

| Resource | Group |
| --- | --- |
| Architectural - Construction | labor |
| Aboveground Pipe - Construction | labor |
| U/G Piping - Construction | labor |
| Major Equipment - Construction | labor |
| Structural Steel - Construction | labor |
| Insulation - Construction | labor |
| Concrete and Paving - Construction | labor |
| Aboveground Electrical - Construction | labor |
| Instrumentation and Control - Construction | labor |
| Site Preparation/ Other Civil - Construction | labor |
| Precommissioning/ Commissioning | labor |

## Schedule

| ID | WBS | Activity | Type | Duration | Start | Finish | Predecessors | Complete | Planned start | Planned finish | Total float | Free float | Constraint | Calendar | zData Date | Sequence | PCA Criticality Index | PCA Duration Sensitivity | User Defined Field 1 | User Definer Field 2 | user_integer2 | EB02 - UNIT | EB01 - RESP | EB03 - AREA | EB05 - DISCIPLINE | EB10 - KEY | EB04 - CLASS | EB00 - EPC | EB22 - Critical Actvities | EB06 - WORK OP | EB11 - FLAG | user_end_date1 | EB07 - REQN | EB08 - TAG | EB12 - TEMP | user_text1 |
| --- | --- | --- | --- | --- | --- | --- | --- | --- | --- | --- | --- | --- | --- | --- | --- | --- | --- | --- | --- | --- | --- | --- | --- | --- | --- | --- | --- | --- | --- | --- | --- | --- | --- | --- | --- | --- |
| EK05ACV100 |  | 05A Soils Investigation - Golder Review & Report |  | 20d | 2006-05-22 A | 2006-07-03 A | EK000YA000 | 100% | 2006-05-22 | 2006-06-16 |  |  |  |  | 2006-07-29 | 150 | 0 | 0 | 05A | C0150 | 107 | 05 | EK | 05A | CV | T1 | C | E | C1 |  |  |  |  |  |  |  |
| CO05AMF200 |  | 05A Final Tank Design Loads Submitted by DSD |  | 5d | 2006-06-01 A | 2006-06-05 A | EK000YA000, EK05ACV100 SS | 100% | 2006-06-12 | 2006-06-16 |  |  |  |  | 2006-07-29 | 150 | 0 | 0 | 05A | C0150 | 107 | 05 | CT | 05A | MF | T1 | M | C | C1 | 1M1 |  |  |  |  |  |  |
| EK05AMD100 |  | 05A Review & Select Ammonia Tank Design |  | 15d | 2006-06-06 A | 2006-07-17 A | CO05AMF200 SS | 100% | 2006-06-19 | 2006-07-07 |  |  |  |  | 2006-07-29 | 150 | 0 | 3.5 | 05A | C0150 | 107 | 05 | EK | 05A | MD | T1 | M | E | C1 |  |  |  |  |  |  |  |
| EK05ACV110 |  | 05A Update Model & Issue Fnd Dwgs-IFC (Ammonia Tanks) |  | 25d | 2006-08-14 A | 2006-11-13 A | EK000YA002, EK05ACV100, EK05AMD100 | 100% | 2006-08-29 | 2006-10-02 |  |  |  |  | 2006-07-29 | 150 | 0 | 0 | 05A | C0150 | 107 | 05 | EM | 05A | CV | C5 | C | E | C1 | C00 | PS |  |  |  |  |  |
|  | EBPM | **Payment Milestones** |  |  | 2005-10-04 | 2009-04-14 |  |  |  |  |  |  |  |  |  |  |  |  |  |  |  |  |  |  |  |  |  |  |  |  |  |  |  |  |  |  |
|  | PM | **Payment Milestones** |  |  | 2005-10-04 | 2009-04-14 |  |  |  |  |  |  |  |  |  |  |  |  |  |  |  |  |  |  |  |  |  |  |  |  |  |  |  |  |  |  |
| EK000YA827 |  | (PC-04) Issue Cooling Tower,Item No. 2101-U Purchase Order | milestone | 0d | 2005-10-04 A | 2005-10-04 A | PK000MU61P FF | 100% | 2006-03-25 | 2006-03-25 |  |  |  | EBWK 7 Day No Holidays | 2006-07-29 |  | 0 | 0 |  |  |  | 00 | CK | 000 | YA | PM | G | C |  | 000 | Z | 2006-04-29 | Gen | 2101U |  |  |
| EK000YA812 |  | (EP-13) Vendor Acceptance of Commitment for Boiler Package, 2002-U | milestone | 0d | 2005-10-06 A | 2005-10-06 A | PK000MU41P FF | 100% | 2005-09-26 | 2005-09-26 |  |  |  |  | 2006-07-29 |  | 0 | 0 |  |  |  | 00 | PK | 000 | YA | PM | G | X |  | 000 | Z | 2005-10-29 |  |  |  |  |
| EK000YA820 |  | (EP-20) Vendor Acceptance of Commitment for 101-B | milestone | 0d | 2005-10-21 A | 2005-10-21 A | PK000MBP1P FF | 100% | 2006-03-27 | 2006-03-27 |  |  |  |  | 2006-07-29 |  | 0 | 0 |  |  |  | 00 | PK | 000 | YA | PM | G | X |  | 000 | Z | 2006-02-26 | Gen |  |  |  |
| EK000YA803 |  | (PC-02,EP-04) Issue Project Specific Quality Control Manual | milestone | 0d | 2005-11-30 A | 2005-11-30 A | EK000QM020 FF | 100% | 2005-12-19 | 2005-12-19 |  |  |  |  | 2006-07-29 |  | 0 | 0 |  |  |  | 00 | EK | 000 | YA | PM | G | E |  | 000 | Z | 2005-07-30 |  |  |  |  |
| EK000YA815 |  | (PC-05) Award Contract - Ammonia Storage Tanks - 2101-F/2102 | milestone | 0d | 2006-02-03 A | 2006-02-03 A | PO000MF000 FF, EK000YA000 | 100% | 2006-03-25 | 2006-03-25 |  |  |  | EBWK 6 Day Egypt Holidays | 2006-07-29 |  | 0 | 0 |  |  |  | 00 | CK | 000 | YA | PM | G | C |  | 000 | Z | 2005-11-26 | Gen |  |  |  |
| EK000YA000 |  | (PC-01,EP-01, TLA-01) Receive Owner's "Notice to Proceed" | milestone | 0d | 2006-02-16 A | 2006-02-16 A | EK000YA002 SF | 100% |  |  |  |  |  | EBWK 7 Day No Holidays | 2006-07-29 |  | 0 | 0 |  |  | 0 | 00 | XE | 000 | YA | PM | G | E |  | 000 |  | 2005-08-22 |  |  |  |  |
| EK000YA814 |  | (EP-15) Vendor Acceptance of Commitment for 101-J, 102-J, 103-J & 105-J | milestone | 0d | 2006-03-13 A | 2006-03-13 A | PK000MJ22P FF, PK000MJ21P FF | 100% |  |  |  |  |  |  | 2006-07-29 |  | 0 | 0 |  |  |  | 00 | PK | 000 | YA | PM | G | X |  | 000 | Z | 2005-11-26 | Gen |  |  |  |
| EK000YA816 |  | (EP-16) Vendor Acceptance of Commitment for 105-D | milestone | 0d | 2006-03-13 A | 2006-03-13 A | PK000MD33P FF | 100% |  |  |  |  |  |  | 2006-07-29 |  | 0 | 0 |  |  |  | 00 | PK | 000 | YA | PM | G | X |  | 000 | Z | 2005-12-31 | Gen |  |  |  |
| EK000YA817 |  | (EP-17) Vendor Acceptance of Commitment for High Pressure Boiler Feed Water pumps, 104-J & 107-J | milestone | 0d | 2006-03-13 A | 2006-03-13 A | PK000MJ31P FF, PK000MJ32P FF | 100% |  |  |  |  |  |  | 2006-07-29 |  | 0 | 0 |  |  |  | 00 | PK | 000 | YA | PM | G | X |  | 000 | Z | 2005-12-31 | Gen |  |  |  |
| EK000YA819 |  | (EP-19) Vendor Acceptance of Commitment for 120-C | milestone | 0d | 2006-03-13 A | 2006-03-13 A | PK020MC31H FF | 100% |  |  |  |  |  |  | 2006-07-29 |  | 0 | 0 |  |  |  | 00 | PK | 000 | YA | PM | G | X |  | 000 | Z | 2006-01-28 | Gen |  |  |  |
| EK000YA821 |  | (PC-03,EP-21) Vendor Acceptance of Commitment for Methanator, 106-D | milestone | 0d | 2006-03-13 A | 2006-03-13 A | PK000MD34P FF | 100% |  |  |  |  |  |  | 2006-07-29 |  | 0 | 0 |  |  |  | 00 | PK | 000 | YA | PM | G | X |  | 000 | Z | 2006-02-26 | Gen |  |  |  |
| EK000YA818 |  | (EP-18) Vendor Acceptance of Commitment for 101-C and 102-C | milestone | 0d | 2006-03-22 A | 2006-03-22 A | PK000MC31J FF | 100% | 2006-03-27 | 2006-03-27 |  |  |  |  | 2006-07-29 |  | 0 | 0 |  |  |  | 00 | PK | 000 | YA | PM | G | X |  | 000 | Z | 2006-01-28 | Gen |  |  |  |
| EK000YA825 |  | (EP-24) Vendor Acceptance of Commitment for Demineralizer, 2001-U, & remaining utility equipment | milestone | 0d | 2006-04-17 A | 2006-04-17 A | PK000MU33P FF | 100% | 2006-04-29 | 2006-04-29 |  |  |  | EBWK 7 Day No Holidays | 2006-07-29 |  | 0 | 0 |  |  |  | 00 | PK | 000 | YA | PM | G | X |  | 000 | PS | 2006-04-29 | Gen |  | Y |  |
| EK000YA834 |  | (PC-06,EP-28) Issue ISBL Plot Plan For Construction (IFC) | milestone | 0d | 2006-04-28 A | 2006-04-28 A | EK020PI014 FF | 100% | 2006-06-03 | 2006-06-03 |  |  |  | EBWK 7 Day No Holidays | 2006-07-29 |  | 0 | 0 |  |  |  | 00 | EK | 000 | YA | PM | G | E |  | 000 | PS | 2006-07-29 | Gen |  | Y | Issued 28-Apr-06 |
| EK000YA830 |  | (EP-25) Vendor Acceptance of Commitment for Kellogg Advanced Ammonia Process (KAAP) Catalyst | milestone | 0d | 2006-05-12 A | 2006-05-12 A | EK000MB045 FF, PK000PR20G FF | 100% | 2006-06-01 | 2006-06-01 |  |  |  | EBWK 7 Day No Holidays | 2006-07-29 |  | 0 | 0 |  |  |  | 00 | PK | 000 | YA | PM | G | X |  | 000 | PS | 2006-06-24 | Gen |  | Y |  |
| EK000YA836 |  | (PC-07) Issue 101-B -Primary Reformer Erection Drawings | milestone | 0d | 2006-06-27 A | 2006-06-27 A | EK000MB095 FF+40d | 100% | 2006-07-01 | 2006-07-01 |  |  |  | EBWK 7 Day No Holidays | 2006-07-29 |  | 0 | 0 |  |  |  | 00 | EK | 000 | YA | PM | G | E |  | 000 | PS | 2006-08-26 | Gen |  | Y |  |
| EK000YA829 |  | (EP-31) Vendor Acceptance of Commitment for Substation | milestone | 0d | 2006-07-13 A | 2006-07-13 A | PK000E001K FF | 100% | 2006-09-29 | 2006-09-29 |  |  |  | EBWK 7 Day No Holidays | 2006-07-29 |  | 0 | 0 |  |  |  | 00 | PK | 000 | YA | PM | G | X |  | 000 | PS | 2006-05-27 | Gen |  | Y |  |
| EK000YA828 |  | (EP-30) Vendor Acceptance of Commitment for Electrical 20 MVA Transformers | milestone | 0d | 2006-07-21 A | 2006-07-21 A | PK000E002K FF | 100% | 2006-12-22 | 2006-12-22 |  |  |  | EBWK 7 Day No Holidays | 2006-07-29 |  | 0 | 0 |  |  |  | 00 | PK | 000 | YA | PM | G | X |  | 000 | PS | 2006-05-27 | Gen |  | Y |  |
| EK000YA858 |  | (EP-38) Deliver Syn Gas Compressor, 103-J, and Ammonia Refrig Compressor, 105-J, to site | milestone | 0d | 2006-12-14 A | 2006-12-14 A | PK02CMJ21Z FF | 100% | 2007-01-27 | 2007-01-27 |  |  |  | EBWK 7 Day No Holidays | 2006-07-29 |  | 0 | 0 |  |  |  | 00 | PK | 000 | YA | PM | G | X |  | 000 | PS | 2007-04-28 | Gen |  |  |  |
| EK000YA845 |  | (PC-08) Complete >10% - ISBL -Unit 02 - Pipe Spool Fabrication,>2 Inch Diameter | milestone | 0d | 2006-12-16 A | 2006-12-16 A | CK000U4110 SF+48d | 100% |  |  |  |  |  | EBWK 7 Day No Holidays | 2006-07-29 |  | 0 | 0 |  |  |  | 00 | CK | 000 | YA | PM | G | C |  | 000 | PS | 2006-11-25 | Gen |  |  |  |
| EK000YA843 |  | (PC-18) Complete >90% Bldg No. 2604-K Workshop / Warehouse Erection | milestone | 0d | 2007-01-27 | 2007-01-27 | CO02MC0140 |  |  |  | 750d | 809d |  | EBWK 7 Day No Holidays | 2006-07-29 |  | 0 | 0 |  |  |  | 00 | CO | 000 | YA | PM | G | C |  | 000 | Z | 2006-11-25 | Gen | 2604K |  |  |
| EK000CS040 |  | Issue Operation & Maintenance Manuals for Review |  | 60d | 2007-01-29 | 2007-04-20 | EK000CS025, EK000CS027, EK000YA838 FF |  |  |  | 215d | 0d |  |  | 2006-07-29 |  | 0 | 0 |  |  |  | 00 | SC | 000 | CS |  | G | S |  | G40 |  | 2007-02-24 | Gen |  |  |  |
| EK000CS060 |  | Issue Proposed Operating Training Program for Review |  | 40d | 2007-02-26 | 2007-04-20 | EK000YA838 FF, EK000CS040 FF |  |  |  | 215d | 0d |  |  | 2006-07-29 |  | 0 | 0 |  |  |  | 00 | SC | 000 | CS |  | G | S |  | G40 |  | 2007-02-24 | Gen |  |  |  |
| EK000YA863 |  | (PC-09) Complete >90% Compressor 101-J/JT Equipment Foundation | milestone | 0d | 2007-03-03 | 2007-03-03 | CO02GC0150 |  |  |  | 714d | 773d |  | EBWK 7 Day No Holidays | 2006-07-29 |  | 0 | 0 |  |  |  | 00 | CO | 000 | YA | PM | G | C |  | 000 | PS | 2007-07-28 | Gen |  |  |  |
| EK000YA844 |  | (EP-40) Complete Fabrication of 101-F Steam Drum | milestone | 0d | 2007-03-09 | 2007-03-09 | PK000MD41S FF |  |  |  | 708d | 767d |  | EBWK 7 Day No Holidays | 2006-07-29 |  | 0 | 0 |  |  |  | 00 | PK | 000 | YA | PM | G | X |  | 000 | Z | 2006-11-25 | Gen |  |  |  |
| EK000YA851 |  | (PC-12) Complete >90% - ISBL - Unit 02 Underground Piping Fabrication and installation | milestone | 0d | 2007-03-28 | 2007-03-28 | CO02AU4120 FF, CO02BU4120 FF, CO02CU4120 FF, CO02DU4120 FF, CO02EU4120 FF, CO02FU4120 FF, CO02GU4120 FF, CO02HU4120 FF, CO02JU4120 FF, CO02KU4120 FF, CO02LU4120 FF, CO02MU4120 FF, CO02UP0130 FF, CO02UP0150 FF |  |  |  | 689d | 748d |  | EBWK 7 Day No Holidays | 2006-07-29 |  | 0 | 0 |  |  |  | 00 | CO | 000 | YA | PM | G | C |  | 000 | Z | 2007-02-24 | Gen |  |  |  |
| EK000YA855 |  | (EP-45) Deliver Air Compressor, 101-J, and Feed Gas Compressor, 102-J, to site | milestone | 0d | 2007-04-07 | 2007-04-07 | PK02GMJ21Z FF, PK02GMJ22Z FF |  |  |  | 680d | 739d |  | EBWK 7 Day No Holidays | 2006-07-29 |  | 0 | 0 |  |  |  | 00 | PK | 000 | YA | PM | G | X |  | 000 | Z | 2007-03-31 | Gen |  |  |  |
| EK000YA859 |  | (PC-11) Complete >90% - ISBL - Unit 02 Equipment Foundation | milestone | 0d | 2007-04-22 | 2007-04-22 | CO02AC0110 FF, CO02AC0120 FF, CO02BC0110 FF, CO02BC0120 FF, CO02CC0110 FF, CO02CC0120 FF, CO02CC0150 FF, CO02CC0160 FF, CO02DC0110 FF, CO02DC0120 FF, CO02EC0110 FF, CO02EC0120 FF, CO02EC0140 FF, CO02FC0110 FF, CO02FC0120 FF, CO02GC0110 FF, CO02GC0120 FF, CO02GC0150 FF, CO02GC0160 FF, CO02HC0110 FF, CO02HC0120 FF, CO02HC0140 FF, CO02HC0150 FF, CO02HC0160 FF, CO02JC0110 FF, CO02JC0120 FF, CO02JC0150 FF, CO02JC0160 FF, CO02KC0110 FF, CO02KC0120 FF, CO02KC0150 FF, CO02LC0110 FF, CO02LC0120 FF, CO02LC0140 FF, CO02LC0150 FF, CO02LC0160 FF, CO02MC0110 FF, CO02MC0120 FF, CO02MC0140 FF, CO02MC0150 FF, CO02NC0110 FF, CO02YC0140 FF |  |  |  | 664d | 723d |  | EBWK 7 Day No Holidays | 2006-07-29 |  | 0 | 0 |  |  |  | 00 | CO | 000 | YA | PM | G | C |  | 000 | Z | 2007-05-26 | Gen |  |  |  |
| EK000YA854 |  | (PC-13) Complete >90% - OSBL Unit 01 & 03 Underground Piping Fabrication & Installation | milestone | 0d | 2007-04-25 | 2007-04-25 | CO01BU4120 FF, CO01CU4120 FF, CO01DU4120 FF, CO01EU4130 FF, CO01UP0150 FF, CO03AU4120 FF, CO03BU4120 FF, CO03CU4120 FF, CO03DU4120 FF, CO03EU4120 FF, CO03FU4120 FF, CO03UP0150 FF, CO01GC0150 SF+18d |  |  |  | 661d | 720d |  | EBWK 7 Day No Holidays | 2006-07-29 |  | 0 | 0 |  |  |  | 00 | CO | 000 | YA | PM | G | C |  | 000 | Z | 2007-02-24 | Gen |  |  |  |
| EK000CS050 |  | Issue Operation & Maintenance Manuals IFC |  | 90d | 2007-05-07 | 2007-09-07 | EK000CS040 FS+10d |  |  |  | 375d | 0d |  |  | 2006-07-29 |  | 0 | 0 |  |  |  | 00 | SC | 000 | CS |  | G | S |  | G40 |  | 2007-02-24 | Gen |  |  |  |
| EK000YA856 |  | (EP-43) Deliver majority of tagged field Instruments | milestone | 0d | 2007-05-12 | 2007-05-12 | PK000I9000 FF |  |  |  | 645d | 704d |  | EBWK 7 Day No Holidays | 2006-07-29 |  | 0 | 0 |  |  |  | 00 | PK | 000 | YA | PM | G | X |  | 000 | Z | 2007-03-31 | Gen |  |  |  |
| EK000YA852 |  | (EP-42) Deliver BFW pumps, 104-J, & Lean Solution pumps, 107-J, to site | milestone | 0d | 2007-05-15 | 2007-05-15 | PK02FMJ31Z FF, PK02LMJ32Z FF |  |  |  | 641d | 700d |  | EBWK 7 Day No Holidays | 2006-07-29 |  | 0 | 0 |  |  |  | 00 | PK | 000 | YA | PM | G | X |  | 000 | Z | 2007-02-24 | Gen |  |  |  |
| EK000YA865 |  | (PC-16) Erect 101-B Primary Reformer Heater Stack ,Forced & Induced Draft Fans | milestone | 0d | 2007-05-30 | 2007-05-30 | CO02HM0240 FF, CO02HM0250 FF, CO02HM0255 FF |  |  |  | 626d | 685d |  | EBWK 7 Day No Holidays | 2006-07-29 |  | 0 | 0 |  |  |  | 00 | CO | 000 | YA | PM | G | C |  | 000 | Z | 2007-07-28 | Gen |  |  |  |
| EK000YA867 |  | (PC-19) Complete >90% - Cooling Tower ,Item No. 2101-U Erection | milestone | 0d | 2007-06-03 | 2007-06-03 | CO01DM0130 FF |  |  |  | 622d | 681d |  | EBWK 7 Day No Holidays | 2006-07-29 |  | 0 | 0 |  |  |  | 00 | CO | 000 | YA | PM | G | C |  | 000 | Z | 2007-08-25 | Gen | 2101U |  |  |
| EK000CS070 |  | Issue Operating Training Program |  | 40d | 2007-06-04 | 2007-07-27 | EK000CS060 FS+30d |  |  |  | 375d | 0d |  |  | 2006-07-29 |  | 0 | 0 |  |  |  | 00 | SC | 000 | CS |  | G | S |  | G40 |  | 2007-02-24 | Gen |  |  |  |
| EK000YA850 |  | (PC-15) Complete >90% ISBL Unit 02 aboveground LB ,Greater than 2" pipe fabrication | milestone | 0d | 2007-06-28 | 2007-06-28 | CK02AP0110 FF, CK02BP0110 FF, CK02CP0110 FF, CK02DP0110 FF, CK02EP0110 FF, CK02FP0110 FF, CK02GP0110 FF, CK02HP0110 FF, CK02JP0110 FF, CK02KP0110 FF, CK02LP0110 FF, CK02MP0110 FF, CK02NP0110 FF, CK02PP0110 FF, CK02QP0110 FF, CK02YP0110 FF |  |  |  | 598d | 657d |  | EBWK 7 Day No Holidays | 2006-07-29 |  | 0 | 0 |  |  |  | 00 | CO | 000 | YA | PM | G | C |  | 000 | Z | 2007-02-24 | Gen |  |  |  |
| EK000YA861 |  | (PC-17) Complete >90% - Erection of Steam Drum 101-F Structure | milestone | 0d | 2007-07-14 | 2007-07-14 | CO02YS0110 |  |  |  | 581d | 640d |  | EBWK 7 Day No Holidays | 2006-07-29 |  | 0 | 0 |  |  |  | 00 | CO | 000 | YA | PM | G | C |  | 000 | Z | 2007-06-30 | Gen |  |  |  |
| EK000YA842 |  | (PC-10) Complete >90% - Ammonia Tanks - 2101-F/2102-F Foundation | milestone | 0d | 2007-07-16 | 2007-07-16 | CO05AC0160 FF, CO05AC0165 FF |  |  |  | 579d | 638d |  | EBWK 7 Day No Holidays | 2006-07-29 |  | 0 | 0 |  |  |  | 00 | CO | 000 | YA | PM | G | C |  | 000 | Z | 2006-10-28 | Gen |  |  |  |
| EK000YA862 |  | (PC-14) Complete >90% -Bldg No. 2601-K Main Control Building Erection | milestone | 0d | 2007-07-24 | 2007-07-24 | CO01GA0110 FF |  |  |  | 571d | 630d |  | EBWK 7 Day No Holidays | 2006-07-29 |  | 0 | 0 |  |  |  | 00 | CO | 000 | YA | PM | G | C |  | 000 | Z | 2007-06-30 | Gen | 2601K |  |  |
| EK000YA846 |  | (EP-41) Issue Proposed Operator Training Program | milestone | 0d | 2007-07-27 | 2007-07-27 | EK000CS070 FF |  |  |  | 568d | 627d |  | EBWK 7 Day No Holidays | 2006-07-29 |  | 0 | 0 |  |  |  | 00 | SC | 000 | YA | PM | G | S |  | 000 | Z | 2006-12-30 | Gen |  |  |  |
| EK000YA868 |  | (PC-26) Complete >90% 101-B Primary Reformer Erection | milestone | 0d | 2007-08-23 | 2007-08-23 | CO02HM0275 FF |  |  |  | 541d | 600d |  | EBWK 7 Day No Holidays | 2006-07-29 |  | 0 | 0 |  |  |  | 00 | CO | 000 | YA | PM | G | C |  | 000 | Z | 2007-08-25 | Gen | 101B |  |  |
| EK000YA857 |  | (EP-46) Complete >90% delivery of all ISBL long lead equipment (except 103-J and 105-J) to site | milestone | 0d | 2007-08-28 | 2007-08-28 | PK02HMB42Z FF, PK02KML43Z FF, PK02HMB21Z FF, PK02HMB51Z FF, PK02KML42Z FF, PK02LML42Z FF, PK02MMB81Z FF, PO02AS0000 FF, PO02ES0000 FF, PK02EMD45Z FF, PK02KMD45Z FF, PK02HMB61Z FF, PK02HMBP1K FF, PK02HMD45Z FF, PO02JS0000 FF, PK02PMU35Z FF, PK000MB33Z FF, PK02LMU31Z FF, PO02HS0000 FF, PO02MS0000 FF, PO02DS0000 FF, PK02HMD51Z FF, PK02KMC61Z FF, PK02HMB64Z FF, PK02HMB66Z FF, PK02HMB69Z FF, PK02AMC61Z FF, PK02EMD42Z FF, PK02MMD42Z FF, PK02LMD42Z FF, PK02AMJ37Z FF, PK02HMB68Z FF, PK02HMB63Z FF, PK02HMB65Z FF, PK02AMD22Z FF, PK02KMD22Z FF, PO02LS0000 FF, PK02EMC23Z FF, PK02LMC23Z FF, PK02HMB62Z FF, PK02AMC21Z FF, PK02DMC21Z FF, PK02EMC21Z FF, PK02GMC21Z FF, PK02JMC21Z FF, PK02KMC21Z FF, PK02LMC21Z FF, PK02MMC21Z FF, PK02CMC21Z FF, PK02QMD41Z FF, PK02HMBP1S FF, PK02DMD44Z FF, PK02LMD44Z FF, PK02LMD47Z FF, PO02ES0010 FF, PO02DS0010 FF, PO02MS0010 FF, PO02AS0010 FF, PK02KMJ35Z FF, PK02LMJ35Z FF, PK02DMJ35Z FF, PK02GMJ35Z FF, PK02CMJ35Z FF, PO02FS0010 FF, PK02EMD34Z FF, PK02JMD32Z FF, PK02JMD34Z FF, PO02HS0010 FF, PK02HMC31Z FF, PO02JS0010 FF, PK02DMD43Z FF, PO02GS0010 FF, PO02KS0010 FF, PK02HMD31Z FF, PO02LS0010 FF, PK02FMJ34Z FF, PK02GMJ75Z FF, PK02CMJ75Z FF, PO02CS0010 FF, PK02HMBP1T FF, PK02LMD21Z FF, PK02MMD33Z FF, PK02FMJ31Z FF, PK02LMJ32Z FF, PK02GMJ21Z FF, PK02CMJ21Z FF, PK02GMJ22Z FF, PK02JMC32Z FF, PK02BML31Z FF, PK02MMC32Z FF, PK02NMC32Z FF, PK02HMBP1Q FF, PK02HMBP1R FF, PK02LMD21Y FF, PK05AMJ37A FF, PK000MJ38A FF, PK000MB71Z FF, PK000MD44Q FF, PK02AMD22D FF, PK01BMJ35Z FF, PK03CMJ35Z FF, PK03DMJ35Z FF, PK05AMJ35Z FF, PK02KMD45A FF, PK02LMC23A FF, PK020MC31I FF, ZZ2120 FF |  |  |  | 536d | 595d |  | EBWK 7 Day No Holidays | 2006-07-29 |  | 0 | 0 |  |  |  | 00 | PK | 000 | YA | PM | G | X |  | 000 | Z | 2007-04-28 | Gen |  |  |  |
| EK000YA864 |  | (PC-22) Complete >90% - ISBL - Unit 02 equipment installation | milestone | 0d | 2007-08-29 | 2007-08-29 | CO02CM0150 FF, CO02DM0110 FF, CO02DM0150 FF, CO02EM0110 FF, CO02FM0110 FF, CO02FM0150 FF, CO02GM0110 FF, CO02GM0125 FF, CO02GM0130 FF, CO02GM0140 FF, CO02GM0150 FF, CO02JM0110 FF, CO02KM0110 FF, CO02JM0140 FF, CO02JM0130 FF, CO02KM0150 FF, CO02LM0110 FF, CO02LM0120 FF, CO02LM0130 FF, CO02LM0140 FF, CO02LM0150 FF, CO02MM0110 FF, CO02MM0130 FF, CO02NM0110 FF, CO02PM0110 FF, CO02QM0110 FF, CO02CM0140 FF, CO02CM0130 FF, CO02CM0125 FF, CO02CM0110 FF, CO02BM0110 FF, CO02AM0150 FF, CO02AM0110 FF, CO02MM0140 FF |  |  |  | 535d | 594d |  | EBWK 7 Day No Holidays | 2006-07-29 |  | 0 | 0 |  |  |  | 00 | CO | 000 | YA | PM | G | C |  | 000 | Z | 2007-07-28 | Gen |  |  |  |
| EK000YA853 |  | (EP-44) Issue Operation & Maintenance Manuals | milestone | 0d | 2007-09-07 | 2007-09-07 | EK000CS050 FF |  |  |  | 526d | 585d |  | EBWK 7 Day No Holidays | 2006-07-29 |  | 0 | 0 |  |  |  | 00 | SC | 000 | YA | PM | G | S |  | 000 | Z | 2007-02-24 | Gen |  |  |  |
| EK000YA871 |  | (PC-20) Install export Ammonia Line from EBIC site to Storage Tank,2101-F/2102-F Battery Limit | milestone | 0d | 2007-09-08 | 2007-09-08 | CO04AU4120 FF |  |  |  | 526d | 585d |  | EBWK 7 Day No Holidays | 2006-07-29 |  | 0 | 0 |  |  |  | 00 | CO | 000 | YA | PM | G | C |  | 000 | Z | 2007-09-29 | Gen |  |  |  |
| EK000YA866 |  | (PC-25) Complete >90% - OSBL - Unit 01 & 03 Electrical lighting installation | milestone | 0d | 2007-10-08 | 2007-10-08 | CO01AE0120 FF, CO01BE0120 FF, CO01CE0120 FF, CO01DE0120 FF, CO01EE0120 FF, CO01FE0120 FF, CO01GE0120 FF, CO01HE0120 FF, CO01YE0120 FF, CO03AE0120 FF, CO03BE0120 FF, CO03CE0120 FF, CO03DE0120 FF, CO03EE0120 FF, CO03FE0120 FF |  |  |  | 495d | 554d |  | EBWK 7 Day No Holidays | 2006-07-29 |  | 0 | 0 |  |  |  | 00 | CO | 000 | YA | PM | G | C |  | 000 | Z | 2007-08-25 | Gen |  |  |  |
| EK000YA873 |  | (PC-21) Install DCS in Main Control Building | milestone | 0d | 2007-10-10 | 2007-10-10 | CO01GI0150 FF, CO01HT0110 FF |  |  |  | 493d | 552d |  | EBWK 7 Day No Holidays | 2006-07-29 |  | 0 | 0 |  |  |  | 00 | CO | 000 | YA | PM | G | C |  | 000 | Z | 2007-10-27 | Gen |  |  |  |
| EK000YA876 |  | (PC-23) Complete >90% - OSBL - Unit 01 & 03 pipe testing -visual,service,hydrostatic,or pneumatic testing | milestone | 0d | 2007-11-04 | 2007-11-04 | CO01AP0150 FF, CO01BP0150 FF, CO01CP0150 FF, CO01DP0150 FF, CO03AP0150 FF, CO03BP0150 FF, CO03CP0150 FF, CO03DP0150 FF, CO03EP0150 FF, CO03FP0150 FF |  |  |  | 468d | 527d |  | EBWK 7 Day No Holidays | 2006-07-29 |  | 0 | 0 |  |  |  | 00 | CO | 000 | YA | PM | G | C |  | 000 | Z | 2007-12-29 | Gen |  |  |  |
| EK000YA890 |  | (PC-27) Complete >10% - ISBL - Unit 02 Hot & Cold Pipe Insulation | milestone | 0d | 2007-12-02 | 2007-12-02 | CO000K0100 |  |  |  | 108d | 0d | as late as possible | EBWK 7 Day No Holidays | 2006-07-29 |  | 0 | 0 |  |  |  | 00 | CO | 000 | YA | PM | G | C |  | 000 | Z | 2008-01-26 | Gen |  |  |  |
| EK000YA869 |  | (PC-30) Complete >90% - ISBL - Unit 02 - Equipment Insulation | milestone | 0d | 2007-12-31 | 2007-12-31 | CO02AV2110 FF, CO02BV2110 FF, CO02CV2110 FF, CO02DV2110 FF, CO02EV2110 FF, CO02FV2110 FF, CO02GV2110 FF, CO02HV2110 FF, CO02JV2110 FF, CO02KV2110 FF, CO02LV2110 FF, CO02MV2110 FF, CO02NV2110 FF, CO02PV2110 FF, CO02QV2110 FF |  |  |  | 411d | 470d |  | EBWK 7 Day No Holidays | 2006-07-29 |  | 0 | 0 |  |  |  | 00 | CO | 000 | YA | PM | G | C |  | 000 | Z | 2007-08-25 | Gen |  |  |  |
| EK000YA879 |  | (PC-24) Commence Pre-commissioning Activities | milestone | 0d | 2008-01-20 | 2008-01-20 | SC03AT0130 SF |  |  |  | 392d | 451d |  | EBWK 7 Day No Holidays | 2006-07-29 |  | 0 | 0 |  |  |  | 00 | SC | 000 | YA | PM | G | S |  | 000 | Z | 2008-01-27 | Gen |  |  |  |
| EK000YA878 |  | (PC-28) Mechanical Completion - OSBL - Unit 01 & 03 Utilities &Plant site Offsites | milestone | 0d | 2008-02-03 | 2008-02-03 | CO03AT0110 FF, CO03BT0110 FF, CO03CT0110 FF, CO03DT0110 FF, CO03ET0110 FF, CO03FT0110 FF, CO01AT0110 FF, CO01BT0110 FF, CO01CT0110 FF, CO01DT0110 FF, CO01ET0110 FF, CO01FT0110 FF, CO01GT0110 FF, CO01HT0110 FF |  |  |  | 377d | 436d |  | EBWK 7 Day No Holidays | 2006-07-29 |  | 0 | 0 |  |  |  | 00 | CO | 000 | YA | PM | G | C |  | 000 | Z | 2008-01-26 | Gen |  |  |  |
| EK000YA872 |  | (EP-47) Deliver Converter Catalyst to site | milestone | 0d | 2008-02-11 | 2008-02-11 | PK020PR20S FF |  |  |  | 369d | 428d |  | EBWK 7 Day No Holidays | 2006-07-29 |  | 0 | 0 |  |  |  | 00 | PK | 000 | YA | PM | G | X |  | 000 | Z | 2007-12-29 | Gen |  |  |  |
| EK000YA837 |  | (PC-36) Complete >90% - Site Preparation within the EBIC Plant Site boundary wall | milestone | 0d | 2008-02-27 | 2008-02-27 | XE000K0110 FF, XE05AOW340 FF, CO010K0130 FF, CO010K0140 |  |  |  | 353d | 412d |  | EBWK 7 Day No Holidays | 2006-07-29 |  | 0 | 0 |  |  |  | 00 | CO | 000 | YA | PM | G | C |  | 000 | Z | 2006-09-30 | Gen |  | Y |  |
| EK000YA874 |  | (PC-31) Complete >90% - ISBL - Unit 02 - LB Greater than 2" piping installation | milestone | 0d | 2008-03-08 | 2008-03-08 | CO02AP0130 FF, CO02AP0140 FF, CO02BP0130 FF, CO02BP0140 FF, CO02CP0130 FF, CO02CP0140 FF, CO02DP0130 FF, CO02DP0140 FF, CO02EP0130 FF, CO02EP0140 FF, CO02FP0130 FF, CO02FP0140 FF, CO02GP0130 FF, CO02GP0140 FF, CO02HP0130 FF, CO02HP0140 FF, CO02JP0130 FF, CO02JP0140 FF, CO02KP0130 FF, CO02KP0140 FF, CO02LP0130 FF, CO02LP0140 FF, CO02MP0130 FF, CO02MP0140 FF, CO02NP0130 FF, CO02NP0140 FF, CO02PP0130 FF, CO02PP0140 FF, CO02QP0130 FF, CO02QP0140 FF |  |  |  | 343d | 402d |  | EBWK 7 Day No Holidays | 2006-07-29 |  | 0 | 0 |  |  |  | 00 | CO | 000 | YA | PM | G | C |  | 000 | Z | 2007-11-24 | Gen |  |  |  |
| EK000YA870 |  | (PC-34) Complete >90% - ISBL - Unit 02 Instruments Installed | milestone | 0d | 2008-03-15 | 2008-03-15 | CO02AI0120 FF, CO02BI0120 FF, CO02CI0120 FF, CO02DI0120 FF, CO02EI0120 FF, CO02FI0120 FF, CO02GI0120 FF, CO02HI0120 FF, CO02JI0120 FF, CO02KI0120 FF, CO02LI0120 FF, CO02MI0120 FF, CO02NI0120 FF, CO02PI0120 FF, CO02QI0120 FF |  |  |  | 336d | 395d |  | EBWK 7 Day No Holidays | 2006-07-29 |  | 0 | 0 |  |  |  | 00 | CO | 000 | YA | PM | G | C |  | 000 | Z | 2007-09-29 | Gen |  |  |  |
| EK000YA877 |  | (PC-33) Complete >90% - ISBL - Unit 02 pipe testing -visual,service,hydrostatic,or pneumatic testing | milestone | 0d | 2008-03-15 | 2008-03-15 | CO02AP0150 FF, CO02BP0150 FF, CO02CP0150 FF, CO02DP0150 FF, CO02EP0150 FF, CO02FP0150 FF, CO02GP0150 FF, CO02HP0150 FF, CO02JP0150 FF, CO02KP0150 FF, CO02LP0150 FF, CO02MP0150 FF, CO02NP0150 FF, CO02PP0150 FF, CO02QP0150 FF |  |  |  | 336d | 395d |  | EBWK 7 Day No Holidays | 2006-07-29 |  | 0 | 0 |  |  |  | 00 | CO | 000 | YA | PM | G | C |  | 000 | Z | 2007-12-29 | Gen |  |  |  |
| EK000YA860 |  | (PC-29) Complete Erection of Ammonia Storage Tanks 2101-F/2102-F | milestone | 0d | 2008-04-08 | 2008-04-08 | CO05AM0145 FF, CO05AM0155 |  |  |  | 312d | 371d |  | EBWK 7 Day No Holidays | 2006-07-29 |  | 0 | 0 |  |  |  | 00 | CO | 000 | YA | PM | G | C |  | 000 | Z | 2007-05-26 | Gen | 2101F |  |  |
| EK000YA875 |  | (PC-35) Complete >90% - ISBL - Unit 02 Instrument loops checked | milestone | 0d | 2008-04-18 | 2008-04-18 | CO02AI0140 FF, CO02BI0140 FF, CO02CI0140 FF, CO02DI0140 FF, CO02EI0140 FF, CO02FI0140 FF, CO02GI0140 FF, CO02HI0140 FF, CO02JI0140 FF, CO02KI0140 FF, CO02LI0140 FF, CO02MI0140 FF, CO02NI0140 FF, CO02PI0140 FF, CO02QI0140 FF, CO02YI0140 FF, EK000YA881 FF |  |  |  | 302d | 361d |  | EBWK 7 Day No Holidays | 2006-07-29 |  | 0 | 0 |  |  |  | 00 | CO | 000 | YA | PM | G | C |  | 000 | Z | 2007-11-24 | Gen |  |  |  |
| EK000YA881 |  | (PC-37) Mechanical Completion - ISBL - Unit 02 -Ammonia | milestone | 0d | 2008-04-18 | 2008-04-18 | CO02AT0110 FF, CO02BT0110 FF, CO02CT0110 FF, CO02DT0110 FF, CO02ET0110 FF, CO02FT0110 FF, CO02GT0110 FF, CO02HT0110 FF, CO02JT0110 FF, CO02KT0110 FF, CO02LT0110 FF, CO02MT0110 FF, CO02NT0110 FF, CO02PT0110 FF, CO02QT0110 FF, EK000CS060 FF+260d, EK000CS070 FF+30d |  |  |  | 302d | 0d |  | EBWK 7 Day No Holidays | 2006-07-29 |  | 0 | 0 |  |  |  | 00 | CO | 000 | YA | PM | G | C |  | 000 | Z | 2008-02-23 | Gen |  |  |  |
| EK000YA882 |  | (PC-32) Complete >90% - ISBL - Unit 02 chemical cleaning LP,MP & HP steam systems | milestone | 0d | 2008-04-28 | 2008-04-28 | SC000T0100 SF+30d |  |  |  | 292d | 351d |  | EBWK 7 Day No Holidays | 2006-07-29 |  | 0 | 0 |  |  |  | 00 | SC | 000 | YA | PM | G | S |  | 000 | Z | 2008-03-29 | Gen |  |  |  |
| EK000YA880 |  | (PC-38) Feed Gas into Ammonia Unit | milestone | 0d | 2008-06-10 | 2008-06-10 | SC000T0105 SF |  |  |  | 250d | 309d |  | EBWK 7 Day No Holidays | 2006-07-29 |  | 0 | 0 |  |  |  | 00 | XE | 000 | YA | PM | G | C |  | 000 | Z | 2008-02-23 | Gen |  |  |  |
| EK000YA883 |  | (PC-39) First Ammonia produced | milestone | 0d | 2008-06-30 | 2008-06-30 | SC000T0105 SF+21d |  |  |  | 55d | 0d |  | EBWK 7 Day No Holidays | 2006-07-29 |  | 0 | 0 |  |  |  | 00 | SC | 000 | CS | PM | G | S |  | 000 | Z | 2008-03-29 | Gen |  |  |  |
| EK000YA884 |  | (PC-40) Begin Production Test run | milestone | 0d | 2008-06-30 | 2008-06-30 | EK000YA883 FF |  |  |  | 55d | 0d |  | EBWK 7 Day No Holidays | 2006-07-29 |  | 0 | 0 |  |  |  | 00 | SC | 000 | YA | PM | G | S |  | 000 | Z | 2008-04-26 | Gen |  |  |  |

Notes:
- EK000YA879: basis of schedule: 27-Jan-08

| ID | WBS | Activity | Type | Duration | Start | Finish | Predecessors | Complete | Planned start | Planned finish | Total float | Free float | Constraint | Calendar | zData Date | PCA Criticality Index | PCA Duration Sensitivity | user_end_date1 | EB02 - UNIT | EB01 - RESP | EB06 - WORK OP | EB03 - AREA | EB05 - DISCIPLINE | EB07 - REQN | EB10 - KEY | EB04 - CLASS | EB11 - FLAG | EB00 - EPC | EB22 - Critical Actvities | EB12 - TEMP | Optimistic Duration | Most Likely Duration | Pessimistic Duration | Sequence | User Defined Field 1 | User Definer Field 2 | user_text1 | EB15 - Civil / U/G Path of Construction | EB16 - Piping Path of Construction | EB17 - Suffix | EB21 - Rev 2 Risk Associations | user_integer1 | user_number1 | user_integer2 | EB14 - RISK |
| --- | --- | --- | --- | --- | --- | --- | --- | --- | --- | --- | --- | --- | --- | --- | --- | --- | --- | --- | --- | --- | --- | --- | --- | --- | --- | --- | --- | --- | --- | --- | --- | --- | --- | --- | --- | --- | --- | --- | --- | --- | --- | --- | --- | --- | --- |
| EK000YA886 |  | (PC-41) Begin Reliability Test | milestone | 0d | 2008-06-30 | 2008-06-30 | EK000YA884 FF |  |  |  | 55d | 114d |  | EBWK 7 Day No Holidays | 2006-07-29 | 0 | 0 | 2008-05-31 | 00 | SC | 000 | 000 | YA | Gen | PM | G | Z | S |  |  |  |  |  |  |  |  |  |  |  |  |  |  |  |  |  |
| EK000YA885 |  | (PC-42) Complete Production Test run | milestone | 0d | 2008-08-03 | 2008-08-03 | SC000T0110 SF+10d |  |  |  | 195d | 254d |  | EBWK 7 Day No Holidays | 2006-07-29 | 0 | 0 | 2008-04-26 | 00 | SC | 000 | 000 | YA | Gen | PM | G | Z | S |  |  |  |  |  |  |  |  |  |  |  |  |  |  |  |  |  |
| EK000YA887 |  | (PC-43) Complete Reliability Test | milestone | 0d | 2008-10-22 | 2008-10-22 | EK000YA886 FF, SC000T0110 FF |  |  |  | -59d | 0d |  | EBWK 7 Day No Holidays | 2006-07-29 | 100 | 0 | 2008-06-28 | 00 | SC | 000 | 000 | YA | Gen | PM | G | Z | S | C1 |  |  |  |  |  |  |  |  |  |  |  |  |  |  |  |  |
| SC000T0120 |  | (PC-44) Provisional Completion | milestone | 0d | 2008-10-22 | 2008-10-22 | SC000T0110 |  |  |  | -59d | 0d |  | EBWK 7 Day No Holidays | 2006-07-29 | 100 | 0 | 2008-06-28 | 00 | SC | 000 | 000 | GE | Gen | PM | G | Z | S | C1 | L3 |  |  |  |  |  |  |  |  |  |  |  |  |  |  |  |
| SC000YA700 |  | Contractual Completion Date (15-Feb-09) | milestone | 0d | 2009-04-14 | 2009-04-14 | EK000YA040, EK000FA005 FF, SC000YA100 FF, EK000YA804 FF, EK000YA805 FF, EK000YA807 FF, EK000YA808 FF, EK000YA802 FF, EK000YA811 FF, EK000YA806 FF, EK000YA810 FF, EK000YA803 FF, EK000YA816 FF, EK000YA817 FF, EK000YA820 FF, EK000YA821 FF, EK000YA819 FF, EK000YA815 FF, EK000YA809 FF, EK000YA812 FF, EK000YA825 FF, EK000YA827 FF, EK000YA818 FF, EK000YA814 FF, EK000YA837 FF, EK000YA813 FF, EK000YA831 FF, EK000YA836 FF, EK000YA826 FF, EK000YA824 FF, EK000YA822 FF, EK000YA834 FF, EK000YA841 FF, EK000YA829 FF, EK000YA828 FF, EK000YA830 FF, EK000YA844 FF, EK000YA845 FF, EK000YA833 FF, EK000YA839 FF, EK000YA832 FF, EK000YA848 FF, EK000YA842 FF, EK000YA847 FF, EK000YA850 FF, EK000YA852 FF, EK000YA859 FF, EK000YA861 FF, EK000YA856 FF, EK000YA855 FF, EK000YA858 FF, EK000YA867 FF, EK000YA843 FF, EK000YA872 FF, EK000YA846 FF, EK000YA862 FF, EK000YA851 FF, EK000YA854 FF, EK000YA857 FF, EK000YA865 FF, EK000YA853 FF, EK000YA863 FF, EK000YA871 FF, EK000YA873 FF, EK000YA864 FF, EK000YA876 FF, EK000YA879 FF, EK000YA874 FF, EK000YA869 FF, EK000YA870 FF, EK000YA877 FF, EK000YA860 FF, EK000YA868 FF, EK000YA866 FF, EK000YA878 FF, EK000YA875 FF, EK000YA882 FF, EK000YA880 FF, EK000YA885 FF, EK000EB015 FF+354d, EK000YA889 FF, XE000OW120 FF, XE000OW230 FF, XE000OW290 FF, XE000OW305 FF, XE000OW310 FF, XE000OW335 FF, XE000OW345 FF, XE000OW450 FF, XE000OW455 FF, XE000OW460 FF, XE000OW470 FF, XE000OW350 FF, XE05AOW340 FF, XE000OW355 FF, XE000OW360 FF, XE000OW410 FF, XE000OW420 FF, XE000OW425 FF, XE05BM0150 FF, XE000OW365 FF, XE000OW375 FF, XE000OW380 FF, XE000OW405 FF, WO030V2100, WO010I0100, WO020U3100, WO010V1100, WO010M0100, WO030I0100, WO010V2100, WO030U3100, WO030C0100, WO030V1100, WO010P0100, WO030S0100, WO030M0100, WO010E0100, WO030U4100, WO020E0100, WO020C0100, WO020V1100, WO030P0100, WO010U3100, WO050U3100, WO020V2100, WO050M0100, WO030E0100, WO020I0100, WO020M0100, WO020U4100, WO010S0100, WO020S0100, WO050I0100, WO050U4100, WO010U4100, WO020P0100, WO050V2100, WO050S0100, WO010C0100, WO050V1100, WO050E0100, WO050C0100, WO050P0100, WO04AC0100, XE000OW373 FF, XE000OW374 FF, WO010K0100, WO04AE0100, WO04AI0100, WO04AM0100, WO04AS0100, WO04AU3100, WO04AU4100, WO04AV1100, WO04AV2100, WO050A0100, WO04AK0100, WC000T1100, WO010A0100, WO020K0100, WO030K0100, WO050K0100, WT010M0100, WT020M0100, WT030M0100, WT050M0100, WP000U3100, WK000P0100, XE000OW340, XE000OW370, CO000K0106 FF, WO010K0110, WO010C0110, WO020C0110, WO030C0110, WO050C0110, EK000YA030 |  |  |  | -59d | 0d | finish on or after 2009-02-15; finish on or before 2009-02-15 | EBWK 7 Day No Holidays | 2006-07-29 | 100 | 0 |  | 00 | SC | 000 | 000 | YA | Gen |  | G |  | S | C1 | L3 |  |  |  |  |  |  |  |  |  |  |  |  |  |  |  |
|  | EBCL | **EBIC Client** |  |  | 2005-03-28 | 2008-02-27 |  |  |  |  |  |  |  |  |  |  |  |  |  |  |  |  |  |  |  |  |  |  |  |  |  |  |  |  |  |  |  |  |  |  |  |  |  |  |  |
| EK000EB005 |  | Approve Project Coordination Procedure (EBIC) |  | 34d | 2005-03-28 A | 2005-06-29 A | EK000PM015, PK000MM015 FF, EK000YA002 SS | 100% | 2005-03-28 | 2005-05-12 |  |  |  |  | 2006-07-29 | 0 | 0 |  | 00 | EK | G10 | 000 | EB |  |  | X | X | X |  |  |  |  |  |  |  |  |  |  |  |  |  |  |  |  |  |
| XE000K0110 |  | (EBIC) Clear & Level EBIC Site (by Owner) |  | 92d | 2005-11-07 A | 2005-12-31 A | EK000CV145, EK000YA002 SS | 100% | 2005-10-29 | 2006-01-28 |  |  |  | EBWK 7 Day No Holidays | 2006-07-29 | 0 | 0 |  | 00 | XE | 1K0 | 000 | K0 |  |  | K |  | C |  |  |  |  |  |  |  |  |  |  |  |  |  |  |  |  |  |
| EK000EB010 |  | Client to confirm Gas Composition (EBIC) | milestone | 0d | 2005-11-14 A | 2005-11-14 A | EK000YA002 SF | 100% |  |  |  |  |  |  | 2006-07-29 | 0 | 0 |  | 00 | EK | G10 | 000 | EB |  |  | X | X | X |  |  |  |  |  |  |  |  |  |  |  |  |  |  |  |  |  |
| XE000OW160 |  | (EBIC) Execute Contracts - EPC | milestone | 0d | 2005-11-17 A | 2005-11-17 A | EK000YA002 SF | 100% | 2005-11-12 | 2005-11-12 |  |  |  | EBWK 7 Day No Holidays | 2006-07-29 | 0 | 0 |  | 00 | XE | 000 | 000 | EB |  |  | G |  | X |  |  |  |  |  |  |  |  |  |  |  |  |  |  |  |  |  |
| XE000OW301 |  | 05B SPDC TO Provide Required Eng. Data |  | 10d | 2006-03-01 A | 2006-11-10 A | EK000YA002 | 100% | 2006-05-09 | 2006-05-22 |  |  |  |  | 2006-07-29 | 0 | 0 |  | 05 | EK | P20 | 05B | PI |  | P01 | P |  | E |  |  | 10 | 15 | 30 | 030 | 05B | PI030 | No Longer KBR Scope (OCI) | 38 | 40 | E2B2 | 05A |  |  |  |  |
| XE000OW341 |  | (EBIC) Permit - Wall | milestone | 0d | 2006-03-24 A | 2006-03-24 A | EK000YA002 SF | 100% | 2006-05-01 | 2006-05-01 |  |  |  | EBWK 7 Day No Holidays | 2006-07-29 | 0 | 0 |  | 00 | XE | 000 | 000 | EB | Gen |  | G |  | X |  |  |  |  |  |  |  |  |  |  |  |  |  |  |  |  |  |
| XE000OW290 |  | (EBIC) Telephones @ Site & Port | milestone | 0d | 2006-03-30 A | 2006-03-30 A | EK000YA002 SF | 100% | 2006-04-08 | 2006-04-08 |  |  |  | EBWK 7 Day No Holidays | 2006-07-29 | 0 | 0 |  | 00 | XE | 000 | 000 | EB | Gen |  | G |  | X |  |  |  |  |  |  |  |  |  |  |  |  |  |  |  |  |  |
| XE000OW300 |  | 04A SPDC TO Provide Required Eng. Data |  | 10d | 2006-04-24 A | 2006-06-12 A | EK000YA002 | 100% | 2006-05-01 | 2006-05-12 |  |  |  |  | 2006-07-29 | 0 | 0 |  | 04 | EK | P20 | 04A | PI |  | P01 | P | CD | E |  |  | 40 | 60 | 120 | 030 | 04A | PI030 | Perma Pipe Routing design required | 28 | 41 | E2B2 | 05A | 25 |  |  |  |
| XE000OW270 |  | (EBIC) Permit - Buildings (SIDC) | milestone | 0d | 2006-04-30 A | 2006-04-30 A | EK000YA002 SF | 100% | 2006-06-01 | 2006-06-01 |  |  |  | EBWK 7 Day No Holidays | 2006-07-29 | 0 | 0 |  | 00 | XE | 000 | 000 | EB | Gen |  | G |  | X |  |  |  |  |  |  |  |  |  |  |  |  |  |  |  |  |  |
| XE000OW305 |  | (EBIC) Permit - Free Zone Status (SIDC) | milestone | 0d | 2006-06-01 A | 2006-06-01 A | EK000YA002 SF | 100% | 2006-06-03 | 2006-06-03 |  |  |  | EBWK 7 Day No Holidays | 2006-07-29 | 0 | 0 |  | 00 | XE | 000 | 000 | EB | Gen |  | G |  | X |  |  |  |  |  |  |  |  |  |  |  |  |  |  |  |  |  |
| XE000OW373 |  | (EBIC) Permit - Free Zone Status (SPDC) | milestone | 0d | 2006-06-01 A | 2006-06-01 A | EK000YA002 SF | 100% | 2006-06-03 | 2006-06-03 |  |  |  | EBWK 7 Day No Holidays | 2006-07-29 | 0 | 0 |  | 00 | XE | 000 | 000 | EB | Gen |  | G |  | X |  |  |  |  |  |  |  |  |  |  |  |  |  |  |  |  |  |
| XE000OW310 |  | (EBIC) Arrange For Solid Waste Collection/Disposal | milestone | 0d | 2006-06-05 A | 2006-06-05 A | EK000YA002 SF | 100% | 2006-06-30 | 2006-06-30 |  |  |  | EBWK 7 Day No Holidays | 2006-07-29 | 0 | 0 |  | 00 | XE | 000 | 000 | EB | Gen |  | G |  | X |  |  |  |  |  |  |  |  |  |  |  |  |  |  |  |  |  |
| XE05AOW340 |  | (EBIC) Clear & Level Site For Ammonia Storage | milestone | 0d | 2006-06-30 A | 2006-06-30 A | EK000CV145, EK000YA002 SF | 100% | 2006-07-29 | 2006-07-29 |  |  |  | EBWK 7 Day No Holidays | 2006-07-29 | 0 | 0 |  | 05 | XE | 000 | 05A | K0 |  |  | K | PS | C |  | S2 |  |  |  |  |  |  |  |  |  |  |  |  |  |  |  |
| XE000OW325 |  | (EBIC) Tie-In Construction Elec Power Supply | milestone | 0d | 2006-10-31 A | 2006-10-31 A | EK000YA002 SF | 100% | 2006-11-18 | 2006-11-18 |  |  | as late as possible | EBWK 7 Day No Holidays | 2006-07-29 | 0 | 0 |  | 00 | XE | 000 | 000 | E0 |  |  | G |  | C |  |  |  |  |  |  |  |  |  |  |  |  |  |  | 54.99791666 |  |  |
| XE000OW335 |  | (EBIC) Permit - Land Easement (SIDC Assistance) | milestone | 0d | 2007-01-27 | 2007-01-27 | EK000YA002 SF |  |  |  | 750d | 809d | finish on or after 2007-01-19 | EBWK 7 Day No Holidays | 2006-07-29 | 0 | 0 |  | 00 | XE | 000 | 000 | EB | Gen |  | G |  | X |  |  |  |  |  |  |  |  |  |  |  |  |  |  |  |  |  |
| XE000OW340 |  | (EBIC) Permit - Tanks (SIDC) | milestone | 0d | 2007-01-27 | 2007-01-27 | EK000YA002 SF |  |  |  | 750d | 809d | finish on or after 2007-01-19 | EBWK 7 Day No Holidays | 2006-07-29 | 0 | 0 |  | 00 | XE | 000 | 000 | EB | Gen |  | G |  | X |  |  |  |  |  |  |  |  |  |  |  |  |  |  |  |  |  |
| XE000OW345 |  | (EBIC) Purchase Chemicals For Operation | milestone | 0d | 2007-01-27 | 2007-01-27 | EK000YA002 SF |  |  |  | 750d | 809d | finish on or after 2006-12-31 | EBWK 7 Day No Holidays | 2006-07-29 | 0 | 0 |  | 00 | XE | 000 | 000 | EB | Gen |  | G |  | X |  |  |  |  |  |  |  |  |  |  |  |  |  |  |  |  |  |
| XE000OW355 |  | (EBIC) Tie-In Municipal Water To Site | milestone | 0d | 2007-01-27 | 2007-01-27 | EK000YA002 SF |  |  |  | 353d | 366d | finish on or after 2006-12-31 | EBWK 7 Day No Holidays | 2006-07-29 | 0 | 0 |  | 00 | XE | 000 | 000 | EB | Gen |  | G |  | X |  |  |  |  |  |  |  |  |  |  |  |  |  |  |  |  |  |
| XE000OW370 |  | (EBIC) Permit - Tanks (SPDC) | milestone | 0d | 2007-01-27 | 2007-01-27 | EK000YA002 SF |  |  |  | 750d | 809d | finish on or after 2007-01-19 | EBWK 7 Day No Holidays | 2006-07-29 | 0 | 0 |  | 00 | XE | 000 | 000 | EB | Gen |  | G |  | X |  | S2 |  |  |  |  |  |  |  |  |  |  |  |  |  |  |  |
| XE000OW375 |  | (EBIC) Tie-In Site Electrical Power Supply | milestone | 0d | 2007-01-27 | 2007-01-27 | EK000YA002 SF |  |  |  | 297d | 344d | finish on or after 2006-12-31 | EBWK 7 Day No Holidays | 2006-07-29 | 0 | 0 |  | 00 | XE | 000 | 000 | E0 |  |  | G |  | X |  |  |  |  |  |  |  |  |  |  |  |  |  |  |  |  |  |
| XE000OW405 |  | (EBIC) Tie-In Port Elec Power Supply To Substation | milestone | 0d | 2007-01-27 | 2007-01-27 | EK000YA002 SF |  |  |  | 750d | 809d | finish on or after 2006-11-30 | EBWK 7 Day No Holidays | 2006-07-29 | 0 | 0 |  | 00 | XE | 000 | 000 | E0 |  |  | G |  | X |  |  |  |  |  |  |  |  |  |  |  |  |  |  |  |  |  |
| XE000OW230 |  | (EBIC) Permit - Operating Permit (SPDC) | milestone | 0d | 2007-01-31 | 2007-01-31 | EK000YA002 SF |  |  |  | 746d | 805d | finish on or after 2007-01-31 | EBWK 7 Day No Holidays | 2006-07-29 | 0 | 0 |  | 00 | XE | 000 | 000 | EB | Gen |  | G |  | X |  |  |  |  |  |  |  |  |  |  |  |  |  |  |  |  |  |
| XE000OW374 |  | (EBIC) Permit - Operating Permit (SIDC) | milestone | 0d | 2007-01-31 | 2007-01-31 | EK000YA002 SF |  |  |  | 746d | 805d | finish on or after 2007-01-31 | EBWK 7 Day No Holidays | 2006-07-29 | 0 | 0 |  | 00 | XE | 000 | 000 | EB | Gen |  | G |  | X |  |  |  |  |  |  |  |  |  |  |  |  |  |  |  |  |  |
| XE000OW350 |  | (EBIC) Clear & Level Site For Corridor Piping | milestone | 0d | 2007-02-28 | 2007-02-28 | EK000YA002 SF |  |  |  | 126d | 0d | finish on or after 2007-02-28 | EBWK 7 Day No Holidays | 2006-07-29 | 0 | 0 |  | 00 | XE | 000 | 000 | K0 |  |  | G |  | C |  |  |  |  |  |  |  |  |  |  |  |  |  |  | 55 |  |  |
| XE000OW410 |  | (EBIC) Tie-In Port Fire Water Supply | milestone | 0d | 2007-04-01 | 2007-04-01 | EK000YA002 SF |  |  |  | 686d | 745d | finish on or after 2007-04-01 | EBWK 7 Day No Holidays | 2006-07-29 | 0 | 0 |  | 00 | XE | 000 | 000 | EB | Gen |  | G |  | X |  |  |  |  |  |  |  |  |  |  |  |  |  |  |  |  |  |
| XE000OW420 |  | (EBIC) Tie-In Port Municipal Water Supply | milestone | 0d | 2007-04-01 | 2007-04-01 | EK000YA002 SF |  |  |  | 686d | 745d | finish on or after 2007-04-01 | EBWK 7 Day No Holidays | 2006-07-29 | 0 | 0 |  | 00 | XE | 000 | 000 | EB | Gen |  | G |  | X |  |  |  |  |  |  |  |  |  |  |  |  |  |  |  |  |  |
| XE000OW380 |  | (EBIC) Communication System @ Port | milestone | 0d | 2007-05-02 | 2007-05-02 | EK000YA002 SF |  |  |  | 655d | 714d | finish on or after 2007-05-02 | EBWK 7 Day No Holidays | 2006-07-29 | 0 | 0 |  | 00 | XE | 000 | 000 | E0 |  |  | G |  | X |  |  |  |  |  |  |  |  |  |  |  |  |  |  |  |  |  |
| XE000OW360 |  | (EBIC) Tie-In Natural Gas Line To Site | milestone | 0d | 2007-06-02 | 2007-06-02 | EK000YA002 SF |  |  |  | 624d | 683d | finish on or after 2007-06-02 | EBWK 7 Day No Holidays | 2006-07-29 | 0 | 0 |  | 00 | XE | 000 | 000 | EB | Gen |  | G |  | X |  |  |  |  |  |  |  |  |  |  |  |  |  |  |  |  |  |
| XE000OW425 |  | (EBIC) Tie-In Port Natural Gas | milestone | 0d | 2007-06-02 | 2007-06-02 | EK000YA002 SF |  |  |  | 624d | 683d | finish on or after 2007-06-02 | EBWK 7 Day No Holidays | 2006-07-29 | 0 | 0 |  | 00 | XE | 000 | 000 | EB | Gen |  | G |  | X |  |  |  |  |  |  |  |  |  |  |  |  |  |  |  |  |  |
| XE000OW120 |  | (EBIC) Arrange For First Shipment Of Product | milestone | 0d | 2007-07-01 | 2007-07-01 | EK000YA002 SF |  |  |  | 595d | 654d | finish on or after 2007-07-01 | EBWK 7 Day No Holidays | 2006-07-29 | 0 | 0 |  | 00 | XE | 000 | 000 | EB | Gen |  | G |  | X |  |  |  |  |  |  |  |  |  |  |  |  |  |  |  |  |  |
| XE05BM0150 |  | 05B (EBIC) 05B Liquid Cargo Birth at Port (By Owner) | milestone | 0d | 2007-09-01 | 2007-09-01 | EK000YA002 SF |  |  |  | 94d | 0d | finish on or after 2007-09-01 | EBWK 7 Day No Holidays | 2006-07-29 | 0 | 0 |  | 05 | XE | M00 | 05B | M0 |  |  | M |  | X |  |  |  |  |  | 150 | 05B | M0150 |  |  |  |  | 05A |  |  | 230 | 22 |
| XE000OW450 |  | (EBIC) Operator Training | milestone | 0d | 2007-10-30 | 2007-10-30 | EK000YA002 SF |  |  |  | 473d | 532d | finish on or after 2007-10-30 | EBWK 7 Day No Holidays | 2006-07-29 | 0 | 0 |  | 00 | XE | 000 | 000 | EB | Gen |  | G |  | X |  |  |  |  |  |  |  |  |  |  |  |  |  |  |  |  |  |
| XE000OW470 |  | (EBIC) Purchase First Gas | milestone | 0d | 2007-11-27 | 2007-11-27 | EK000YA002 SF |  |  |  | 446d | 505d | finish on or after 2007-11-27 | EBWK 7 Day No Holidays | 2006-07-29 | 0 | 0 |  | 00 | XE | 000 | 000 | EB | Gen |  | G |  | X |  |  |  |  |  |  |  |  |  |  |  |  |  |  |  |  |  |
| XE000OW455 |  | (EBIC) Nitrogen Supply & Storage @ Port | milestone | 0d | 2008-01-01 | 2008-01-01 | EK000YA002 SF |  |  |  | 411d | 470d | finish on or after 2008-01-01 | EBWK 7 Day No Holidays | 2006-07-29 | 0 | 0 |  | 00 | XE | 000 | 000 | YA | Gen |  | G |  | X |  |  |  |  |  |  |  |  |  |  |  |  |  |  |  |  |  |
| XE000OW460 |  | (EBIC) Nitrogen Supply & Storage @ Site | milestone | 0d | 2008-01-01 | 2008-01-01 | EK000YA002 SF |  |  |  | 411d | 470d | finish on or after 2008-01-01 | EBWK 7 Day No Holidays | 2006-07-29 | 0 | 0 |  | 00 | XE | 000 | 000 | YA | Gen |  | G |  | X |  |  |  |  |  |  |  |  |  |  |  |  |  |  |  |  |  |
| XE000OW365 |  | (EBIC) Tie-In Site Paved Road, Street Lighting | milestone | 0d | 2008-02-27 | 2008-02-27 | EK000YA002 SF |  |  |  | 11d | 0d | as late as possible | EBWK 7 Day No Holidays | 2006-07-29 | 0 | 0 |  | 00 | XE | 000 | 000 | E0 |  |  | G |  | C |  |  |  |  |  |  |  |  |  |  |  |  |  |  | 436.99791666 |  |  |

Notes:
- XE000OW301: basis of schedule: Need third party dock design prior to / commencing Conceptual layout

| ID | WBS | Activity | Duration | Start | Finish | Predecessors | Complete | Remaining | Planned start | Planned finish | Total float | Free float | Constraint | Expected finish | Calendar | zData Date | PCA Criticality Index | PCA Duration Sensitivity | EB02 - UNIT | EB01 - RESP | EB06 - WORK OP | EB03 - AREA | EB05 - DISCIPLINE | EB10 - KEY | EB04 - CLASS | EB11 - FLAG | EB00 - EPC | EB12 - TEMP | EB17 - Suffix | Optimistic Duration | Most Likely Duration | Pessimistic Duration | EB21 - Rev 2 Risk Associations | user_text1 | EB08 - TAG | EB09 - IPMS | Discipl1ne Gorgon |
| --- | --- | --- | --- | --- | --- | --- | --- | --- | --- | --- | --- | --- | --- | --- | --- | --- | --- | --- | --- | --- | --- | --- | --- | --- | --- | --- | --- | --- | --- | --- | --- | --- | --- | --- | --- | --- | --- |
|  | E1B1 | **Ammonia Plant (HOC)** |  | 2005-03-07 | 2008-02-11 |  |  |  |  |  |  |  |  |  |  |  |  |  |  |  |  |  |  |  |  |  |  |  |  |  |  |  |  |  |  |  |  |
|  | E | **Engineering (HOC)** |  | 2005-03-07 | 2007-03-28 |  |  |  |  |  |  |  |  |  |  |  |  |  |  |  |  |  |  |  |  |  |  |  |  |  |  |  |  |  |  |  |  |
|  | 02 | **Ammonia Plant** |  | 2005-03-07 | 2007-03-28 |  |  |  |  |  |  |  |  |  |  |  |  |  |  |  |  |  |  |  |  |  |  |  |  |  |  |  |  |  |  |  |  |
|  | AR | **Architecture Engineering** |  |  |  |  |  |  |  |  |  |  |  |  |  |  |  |  |  |  |  |  |  |  |  |  |  |  |  |  |  |  |  |  |  |  |  |
|  | PE | **Project Engineering** |  |  |  |  |  |  |  |  |  |  |  |  |  |  |  |  |  |  |  |  |  |  |  |  |  |  |  |  |  |  |  |  |  |  |  |
|  | PS | **Planning & Scheduling** |  |  |  |  |  |  |  |  |  |  |  |  |  |  |  |  |  |  |  |  |  |  |  |  |  |  |  |  |  |  |  |  |  |  |  |
|  | QM | **Quality Mgmt.** |  |  |  |  |  |  |  |  |  |  |  |  |  |  |  |  |  |  |  |  |  |  |  |  |  |  |  |  |  |  |  |  |  |  |  |
|  | CE | **Chief Engineering** |  |  |  |  |  |  |  |  |  |  |  |  |  |  |  |  |  |  |  |  |  |  |  |  |  |  |  |  |  |  |  |  |  |  |  |
|  | CV | **Civil Engineering** |  | 2006-02-27 | 2006-04-05 |  |  |  |  |  |  |  |  |  |  |  |  |  |  |  |  |  |  |  |  |  |  |  |  |  |  |  |  |  |  |  |  |
| EK000CV071 |  | 02C & 02G Design of Compressor Table Top | 75d | 2006-02-27 A | 2006-04-05 A | EK000CV045 SS+5d | 100% |  | 2006-02-27 | 2006-06-12 |  |  |  |  |  | 2006-07-29 | 0 | 0 | 02 | EK | C30 | 02C | CV | C3 | C | X | E |  |  |  |  |  |  |  |  |  |  |
|  | EL | **Electrical Engineering** |  | 2005-03-14 | 2007-03-28 |  |  |  |  |  |  |  |  |  |  |  |  |  |  |  |  |  |  |  |  |  |  |  |  |  |  |  |  |  |  |  |  |
| EK020EL100 |  | Overall One line diagrams - ICA Ammonia | 80d | 2005-03-14 A | 2005-11-10 A | EK020PI011 SS, EK010PI011 FF+10d, EK000YA002 SS+15d | 100% |  | 2005-03-14 | 2005-07-06 |  |  |  |  |  | 2006-07-29 | 0 | 0 | 02 | EK | EA1 | 020 | EL |  | E | X | E |  |  |  |  |  |  |  |  |  |  |
| EK020EL150 |  | Switchgear One line diagrams - ICA Ammonia | 107d | 2005-03-14 A | 2005-12-15 A | EK020PI011 SS, EK010PI011 FF, EK000YA002 SS+15d | 100% |  | 2005-03-14 | 2005-08-12 |  |  |  |  |  | 2006-07-29 | 0 | 0 | 02 | EK | EA2 | 020 | EL |  | E | X | E |  |  |  |  |  |  |  |  |  |  |
| EK020EL170 |  | MCC One line diagrams - ICA | 137d | 2005-03-14 A | 2005-12-21 A | EK020PI011 SS, EK010PI011 FF+10d, EK000YA002 SS+15d, PK000MJ73I FF+10d | 100% |  | 2005-03-14 | 2005-09-23 |  |  |  |  |  | 2006-07-29 | 0 | 0 | 02 | EK | EA3 | 020 | EL |  | E | X | E |  |  |  |  |  |  |  |  |  |  |
| EK000EL030 |  | Cable Specification | 10d | 2005-03-28 A | 2005-03-31 A | EK000EL025 SS | 100% |  | 2005-03-28 | 2005-04-08 |  |  |  |  |  | 2006-07-29 | 0 | 0 | 02 | EK | G20 | 020 | EL |  | E | X | E |  |  |  |  |  |  |  |  |  |  |
| EK020EL045 |  | Preliminary Load Summary - IFI | 20d | 2005-03-31 A | 2005-04-21 A | EK000EL015, EK000YA002 SS+20d | 100% |  | 2005-03-31 | 2005-04-27 |  |  |  |  |  | 2006-07-29 | 0 | 0 | 02 | EK | EC1 | 020 | EL |  | E | X | E |  |  |  |  |  |  |  |  |  |  |
| EK020EL123 |  | Preliminary Electrical Load List - IFI | 20d | 2005-03-31 A | 2005-04-21 A | EK000EL015, EK000YA002 SS+20d | 100% |  | 2005-03-31 | 2005-04-27 |  |  |  |  |  | 2006-07-29 | 0 | 0 | 02 | EK | EB0 | 020 | EL |  | E | X | E |  |  |  |  |  |  |  |  |  |  |
| EK000EL010 |  | Electrical Specifications | 21d | 2005-05-12 A | 2005-06-30 A | EK000EL035, EK000YA002 SS+40d | 100% |  | 2005-05-12 | 2005-06-10 |  |  |  |  |  | 2006-07-29 | 0 | 0 | 02 | EK | G20 | 020 | EL |  | E | X | E |  |  |  |  |  |  |  |  |  |  |
| EK020ELG40 |  | Studies/reports | 1d | 2005-06-03 A | 2005-06-29 A | EK000YA002 | 100% |  | 2006-01-30 | 2006-01-30 |  |  |  |  | EBWK - Global | 2006-07-29 | 0 | 0 | 02 | EK | G40 | 020 | EL |  | E | WE | E | X | E1B1 |  |  |  |  |  |  |  |  |
| EK020EL110 |  | Client Review of Overall Oneline Diagrams | 10d | 2005-11-10 A | 2005-11-25 A | EK020EL100 | 100% |  | 2005-11-14 | 2005-11-25 |  |  |  |  |  | 2006-07-29 | 0 | 0 | 02 | EK | EA1 | 020 | EL |  | E | X | E |  |  |  |  |  |  |  |  |  |  |
| EK020EL155 |  | Client Review of Switchgear Oneline Diagrams | 10d | 2005-11-16 A | 2005-11-30 A | EK020EL150 | 100% |  | 2005-12-13 | 2005-12-27 |  |  |  |  |  | 2006-07-29 | 0 | 0 | 02 | EK | EA2 | 020 | EL |  | E | X | E |  |  |  |  |  |  |  |  |  |  |
| EK020EL040 |  | Load Summary - IFD | 70d | 2005-12-01 A | 2005-12-13 A | EK020EL045, PK000MJ21N FF+15d, PK000MJ22N FF+15d, PK000MJ31N FF+15d, PK000MJ32N FF+15d, PK000MJ33N SS+15d, PK000MJ34N FF+15d, PK000MJ35N FF+15d, PK000MJ36N FF+15d, PK000MJ37N FF+15d, PK000MJ39N FF+15d, PK000MU21N FF+15d, PK000MU22N FF+15d, PK000MU30N FF+15d, PK000MU61N FF+15d, EK020EL123, PK000MJ37T FF+15d, PK000MJ33N FF+15d | 100% |  | 2006-01-09 | 2006-04-14 |  |  |  |  |  | 2006-07-29 | 0 | 0 | 02 | EK | EC1 | 020 | EL |  | E | X | E |  |  |  |  |  |  |  |  |  |  |
| EK020EL125 |  | Electrical Load List - First IFD | 55d | 2005-12-01 A | 2005-12-13 A | PK000MJ21N FF+15d, PK000MJ22N FF+15d, PK000MJ31N FF+15d, PK000MJ32N FF+15d, PK000MJ34N FF+15d, PK000MJ35N FF+15d, PK000MJ36N FF+15d, PK000MJ37N FF+15d, PK000MJ39N FF+15d, PK000ML43N FF+15d, PK000MU61N FF+15d, PK000MU21N FF+15d, PK000MU22N FF+15d, PK000MU41N FF+15d, EK020EL123, PK000MB62N FF+15d, PK000MJ33N FF+15d, PK000MU30N FF+15d | 100% |  | 2006-01-30 | 2006-04-14 |  |  |  |  |  | 2006-07-29 | 0 | 0 | 02 | EK | EB0 | 020 | EL |  | E |  | E |  | E1B1 |  |  |  |  |  |  |  |  |
| EK020EL175 |  | Client Review of MCC Oneline Diagrams | 10d | 2005-12-12 A | 2005-12-23 A | EK020EL170 | 100% |  | 2006-01-03 | 2006-01-16 |  |  |  |  |  | 2006-07-29 | 0 | 0 | 02 | EK | EA3 | 020 | EL |  | E | X | E |  |  |  |  |  |  |  |  |  |  |
| EK020EL126 |  | Electrical Load List - Revised IFD w/Outstanding Equip. Data | 30d | 2006-01-13 A | 2006-07-19 A | PK000MB62N FF+15d, PK000MJ33N FF+15d, PK000ML50N FF+15d, PK000MU29N FF+15d, PK000MU30N FF+15d, PK000MJ37T FF+15d, EK020EL125, PK000MJ38T FF+15d, PK000MU31J FF+15d | 100% |  | 2006-03-30 | 2006-05-10 |  |  |  |  |  | 2006-07-29 | 0 | 0.6 | 02 | EK | EB0 | 020 | EL |  | E |  | E |  | E1B1 | 75 | 80 | 90 | 06 |  |  |  |  |
| EK020EL000 |  | ISBL Motor & Drivers - Prod. V. Data (information only) | 47d | 2006-01-16 A | 2006-11-24 A | PK02HMB37, PK02HMB40 FF, PK02GMJV08 FF, PK02CMJV05 FF, PK02GMJV03 FF, PK02FMJV03 FF, PK02LMJV03 FF, PK02FMJV06 SS, PK02CMJV08 FF, PK02HMB21 SS, PK02DMJV03 FF, PK02HMB34 SS, PK02HMB43 FF, PK02GMJV11 FF, PK02KMJV03 FF, PK02HMB52 FF, PK02MMB04 SS, PK02LMJV06 FF, PK02AMC16 FF, ZZ1440 FF, ZZ1500 FF, ZZ1530 FF, ZZ1560 FF, ZZ1600 FF, ZZ1630 FF, ZZ1690 FF, ZZ1720 FF, ZZ1780 FF, ZZ1810 FF, ZZ1870 FF, ZZ1930 FF, ZZ1960 SS, PK02AMJV03 FF, ZZ2020 SS, PK02AMC19 SS, ZZ2050 SS, PK02BMLV03 FF, PK05AMLV03 FF, PK02KMLV03 SS, PK02LMLV03 SS, PK02GMLV03 FF, PK02KMLV06 SS, PK02GMLV06 FF, PK02LMLV06 SS, PK02LMLV09 FF, PK02FMUV03 FF, PK02PMUV03 SS | 100% |  | 2006-03-21 | 2006-05-24 |  |  |  |  | EBWK - Global | 2006-07-29 | 0 | 0 | 02 | EK | EB0 | 020 | EL | P16 | E |  | E |  |  |  |  |  |  | Not Electrical activity, only for electrical info. | X | M |  |
| EK020ELEC4 |  | Conductor Ampacity | 1d | 2006-01-28 A | 2006-01-30 A | EK020ELG20 FF | 100% |  | 2006-01-30 | 2006-01-30 |  |  |  |  | EBWK - Global | 2006-07-29 | 0 | 0 | 02 | EK | EC4 | 020 | EL |  | E | WE | E | X | E1B1 |  |  |  |  |  |  |  |  |
| EK020ELED0 |  | Conceptual Substation Building Layout | 1d | 2006-01-28 A | 2006-01-30 A | EK020EL045 | 100% |  | 2006-01-30 | 2006-01-30 |  |  |  |  | EBWK - Global | 2006-07-29 | 0 | 0 | 02 | EK | ED0 | 020 | EL |  | E | WE | E | X | E1B1 |  |  |  |  |  |  |  |  |
| EK020ELEE0 |  | Tie-in List - IFC | 175d | 2006-01-28 A | 2006-10-02 A | EK000CK060 | 100% |  | 2006-01-30 | 2006-09-29 |  |  |  |  | EBWK - Global | 2006-07-29 | 0 | 0 | 02 | EK | EE0 | 020 | EL | E1 | E | PS | E | X | E1B1 |  |  |  |  |  |  |  |  |
| EK020ELEJ1 |  | Lighting, Installation Details | 1d | 2006-01-28 A | 2006-01-30 A | EK020PI012 | 100% |  | 2006-01-30 | 2006-01-30 |  |  |  |  | EBWK - Global | 2006-07-29 | 0 | 0 | 02 | EK | EJ1 | 020 | EL |  | E | WE | E | X | E1B1 |  |  |  |  |  |  |  |  |
| EK020ELEK1 |  | A/G Power & Control, Details | 1d | 2006-01-28 A | 2006-01-30 A | EK020SY090 | 100% |  | 2006-01-30 | 2006-01-30 |  |  |  |  | EBWK - Global | 2006-07-29 | 0 | 0 | 02 | EK | EK1 | 020 | EL |  | E | WE | E | X | E1B1 |  |  |  |  |  |  |  |  |
| EK020ELG20 |  | Standard Job Specification | 1d | 2006-01-28 A | 2006-01-30 A | EK000YA002 | 100% |  | 2006-01-30 | 2006-01-30 |  |  |  |  | EBWK - Global | 2006-07-29 | 0 | 0 | 02 | EK | G20 | 020 | EL |  | E | WE | E | X | E1B1 |  |  |  |  |  |  |  |  |
| EK020EL200 |  | First Check Estimate - Electrical | 30d | 2006-01-30 A | 2006-02-28 A | EK000GE025 SS | 100% |  | 2006-01-30 | 2006-03-10 |  |  |  |  |  | 2006-07-29 | 0 | 0 | 02 | EK | G30 | 020 | EL |  | E | PS | E |  | E1B1 |  |  |  |  |  |  |  | G30 |
| EK020ELEC2 |  | Short Circuit, Load Flow Motor starting | 40d | 2006-02-10 A | 2006-08-31 A | EK020EL040 FF, EK020ELEC4 FF | 100% |  | 2006-01-30 | 2006-03-24 |  |  |  |  | EBWK - Global | 2006-07-29 | 0 | 0 | 02 | EK | EC2 | 020 | EL |  | E | WE | E | X | E1B1 |  |  |  |  |  |  |  |  |
| EK020EL160 |  | Switchgear One line Diagrams - IFD | 50d | 2006-05-04 A | 2006-09-08 A | EK020EL155, EK020EL040 FF+10d | 100% |  | 2006-05-04 | 2006-07-12 |  |  |  |  |  | 2006-07-29 | 0 | 0 | 02 | EK | EA2 | 020 | EL |  | E | X | E |  |  |  |  |  |  |  |  |  |  |
| EK020EL180 |  | MCC One line Diagrams - IFD | 50d | 2006-05-04 A | 2006-09-08 A | EK020EL175, EK020EL040 FF+10d, EK020EL160 SS | 100% |  | 2006-05-04 | 2006-07-12 |  |  |  |  |  | 2006-07-29 | 0 | 0 | 02 | EK | EA3 | 020 | EL |  | E | X | E |  |  |  |  |  |  |  |  |  |  |
| EK020EL121 |  | Overall One line Diagrams - IFD | 70d | 2006-07-24 A | 2006-09-08 A | EK020EL110, EK020EL040 FF+10d, EK020EL126 FF+20d | 100% |  | 2006-07-24 | 2006-10-27 |  |  |  |  |  | 2006-07-29 | 0 | 0 | 02 | EK | EA1 | 020 | EL |  | E | X | E |  |  | 65 | 70 | 75 |  |  |  |  |  |
| EK020ELG70 |  | Construction & Operation Interfac. | 110d | 2006-08-01 A | 2006-09-11 A | EK000YA002 | 100% |  | 2006-09-11 | 2007-02-09 |  |  |  |  | EBWK - Global | 2006-07-29 | 0 | 0 | 02 | EK | G70 | 020 | EL |  | E | WE | E | X | E1B1 |  |  |  |  |  |  |  |  |
| EK020EL130 |  | Overall One line Diagrams - IFC | 60d | 2006-09-11 A | 2007-01-31 | EK020EL121, EK020ELEC2 FF+20d | 95% | 3d | 2006-09-11 | 2006-12-01 | 82d | 0d |  | 2007-01-31 |  | 2006-07-29 | 0 | 0 | 02 | EK | EA1 | 020 | EL | E1 | E | PS | E |  |  | 90 | 93 | 100 |  |  |  |  |  |
| EK020EL165 |  | Switchgear One line Diagrams - IFC | 50d | 2006-09-25 A | 2007-02-28 | EK020EL160, EK020ELEC2 FF+20d, PK000E001M FF+20d, PK000E002M FF+20d, PK000E004M FF+20d | 54% | 23d | 2006-10-02 | 2006-12-08 | 231d | 0d |  | 2007-02-28 |  | 2006-07-29 | 0 | 0 | 02 | EK | EA2 | 020 | EL | E1 | E | PS | E |  |  |  |  |  |  |  |  |  |  |
| EK020EL185 |  | MCC One line Diagrams - IFC | 50d | 2006-09-25 A | 2007-03-01 | EK020EL180, EK020ELEC2 FF+20d, EK020EL165 SS | 52% | 24d | 2006-10-02 | 2006-12-08 | 231d | 0d |  | 2007-03-01 |  | 2006-07-29 | 0 | 0 | 02 | EK | EA3 | 020 | EL | E1 | E | PS | E |  |  |  |  |  |  |  |  |  |  |
| EK020ELEC3 |  | Protective Device Coordination | 110d | 2006-10-16 A | 2006-12-08 A | EK000YA002 | 100% |  | 2006-10-16 | 2007-03-16 |  |  |  |  | EBWK - Global | 2006-07-29 | 0 | 0 | 02 | EK | EC3 | 020 | EL |  | E | WE | E | X | E1B1 |  |  |  |  |  |  |  |  |
| EK020ELEN1 |  | 02 LV Wiring Diagrams - IFC | 30d | 2006-10-20 A | 2007-02-15 | EM020ELEK2 FF+15d, EM20ELEK2 FS+15d | 53% | 14d | 2006-10-20 | 2006-11-30 | 296d | 0d | start on or after 2006-10-20 | 2007-02-15 | EBWK - Global | 2006-07-29 | 0 | 0 | 02 | EK | EN1 | 020 | EL | E1 | E | PS | E | X | E1B1 |  |  |  |  |  |  |  |  |
| EK020ELEN2 |  | 02 MV WIRING DIAGRAMS & CTL SCHEMATICS - IFC | 30d | 2006-10-20 A | 2007-03-28 | EM020ELEK2 FF+15d, EM20ELEK2 FS+15d |  | 43d | 2006-10-20 | 2006-11-30 | 306d | 0d | start on or after 2006-10-20 | 2007-03-28 | EBWK - Global | 2006-07-29 | 0 | 0 | 02 | EK | EN2 | 020 | EL | E1 | E | PS | E | X | E1B1 |  |  |  |  |  |  |  |  |
| EK020EL210 |  | Production Check Estimate - Electrical | 30d | 2006-10-30 A | 2006-11-24 A | EK000GE030 SS | 100% |  | 2006-10-30 | 2006-12-08 |  |  |  |  |  | 2006-07-29 | 0 | 0 | 02 | EK | G30 | 020 | EL |  | E | PS | E |  | E1B1 |  |  |  |  |  |  |  | G30 |
| EK020ELEM1 |  | Cable & Raceway Schedule - IFC | 50d | 2006-11-13 A | 2007-01-29 A | EM02API200, EM01API200, EM03API200, EM05API200, EM000ELEK2 FF+3d, EM020ELEK2 FF, EM20ELEK2 FF, EK100ELEK2 FF+3d | 100% |  | 2006-11-13 | 2007-01-19 |  |  |  |  | EBWK - Global | 2006-07-29 | 5.3 | 1.5 | 02 | EK | EM1 | 020 | EL | E1 | E | PS | E | X | E1B1 | 40 | 50 | 55 |  |  |  |  |  |
| EK020ELEN3 |  | 02 Equipment Interconnection Diagrams - IFC | 120d | 2007-01-02 A | 2007-03-01 | EM02API200, EM02BPI200, EM02CPI200, EM02DPI200, EM02EPI200, EM02FPI200, EM02GPI200, EM02HPI200, EM02JPI200, EM02KPI200, EM02LPI200, EM02MPI200, EM02NPI200, EM02PPI200, EM02QPI200 | 80% | 24d | 2006-11-01 | 2007-04-17 | 511d | 0d |  | 2007-03-01 | EBWK - Global | 2006-07-29 | 13.1 | 0 | 02 | EK | EN3 | 020 | EL | E1 | E | PS | E | X | E1B1 | 70 | 90 | 95 |  |  |  |  |  |

Notes:
- EK020EL045: P3 Activity Log Info: FMCL as Basis Need Manpower
- EK020EL123: P3 Activity Log Info: FMCL as Basis Need Manpower
- EK020EL040: P3 Activity Log Info: FMCL as Basis Need Manpower

| ID | WBS | Activity | Duration | Start | Finish | Predecessors | Complete | Planned start | Planned finish | zData Date | PCA Criticality Index | PCA Duration Sensitivity | EB02 - UNIT | EB01 - RESP | EB06 - WORK OP | EB03 - AREA | EB05 - DISCIPLINE | EB07 - REQN | EB10 - KEY | EB04 - CLASS | EB11 - FLAG | EB00 - EPC | EB18 - Grouping | Optimistic Duration | Most Likely Duration | Pessimistic Duration | EB09 - IPMS | EB08 - TAG | EB21 - Rev 2 Risk Associations | user_text1 | Sequence | User Defined Field 1 | User Definer Field 2 | EB15 - Civil / U/G Path of Construction | EB16 - Piping Path of Construction | EB17 - Suffix |
| --- | --- | --- | --- | --- | --- | --- | --- | --- | --- | --- | --- | --- | --- | --- | --- | --- | --- | --- | --- | --- | --- | --- | --- | --- | --- | --- | --- | --- | --- | --- | --- | --- | --- | --- | --- | --- |
|  | EV | **Environmental Engineering** |  |  |  |  |  |  |  |  |  |  |  |  |  |  |  |  |  |  |  |  |  |  |  |  |  |  |  |  |  |  |  |  |  |  |
|  | FP | **Fire Protection Engineering** |  |  |  |  |  |  |  |  |  |  |  |  |  |  |  |  |  |  |  |  |  |  |  |  |  |  |  |  |  |  |  |  |  |  |
|  | GE | **General Engineering (All Disciplines)** |  |  |  |  |  |  |  |  |  |  |  |  |  |  |  |  |  |  |  |  |  |  |  |  |  |  |  |  |  |  |  |  |  |  |
|  | IC | **Control Sytems Engineering** |  | 2005-09-12 | 2006-08-15 |  |  |  |  |  |  |  |  |  |  |  |  |  |  |  |  |  |  |  |  |  |  |  |  |  |  |  |  |  |  |  |
| EK000I2300 |  | On/Off Valves - D/S,Sizing,Tech Eval | 15d | 2005-09-12 A | 2005-12-15 A | EK000SY126 FF+10d | 100% | 2005-10-05 | 2005-10-25 | 2006-07-29 | 0 | 0 | 02 | EK | I22 | 020 | IC | I2230 | IR | I | X | E | Copy |  |  |  |  |  |  |  |  |  |  |  |  |  |
| EK020IC210 |  | 020 Control Valves - D/S,Sizing,Tech Eval | 15d | 2005-09-15 A | 2006-08-15 A | EK000SY126 | 100% | 2005-09-12 | 2005-09-30 | 2006-07-29 | 0 | 0.9 | 02 | EK | I22 | 020 | IC | I2210 | IR | I | X | E | Copy | 10 | 15 | 20 |  |  |  |  |  |  |  |  |  |  |
| EK000I1100 |  | 020 Orific Plates - D/S | 15d | 2005-09-23 A | 2005-10-14 A | EK000SY126, PK000I110G | 100% | 2005-09-15 | 2005-10-05 | 2006-07-29 | 0 | 0 | 02 | EK | I21 | 020 | IC | I2110 | IR | I | X | E | Copy |  |  |  |  |  |  |  |  |  |  |  |  |  |
| EK000I1220 |  | Coriolis Meters - D/S | 15d | 2005-09-23 A | 2005-11-23 A | EK000SY126 | 100% | 2005-09-15 | 2005-10-05 | 2006-07-29 | 0 | 0 | 02 | EK | I21 | 020 | IC | I2122 | IR | I | X | E | Copy |  |  |  |  |  |  |  |  |  |  |  |  |  |
| EK000I1121 |  | 020 Venturis - D/S | 15d | 2005-09-26 A | 2005-10-14 A | EK000SY126, PK000I112G | 100% |  |  | 2006-07-29 | 0 | 0 | 02 | EK | I21 | 020 | IC | I2112 | IR | I | X | E | Copy |  |  |  |  |  |  |  |  |  |  |  |  |  |
| EK000I1270 |  | Magnetic Flow Meters D/S | 15d | 2005-10-10 A | 2005-12-02 A | EK000SY126 | 100% | 2005-10-10 | 2005-10-28 | 2006-07-29 | 0 | 0 | 02 | EK | I21 | 020 | IC | I2127 | IR | I | X | E | Copy |  |  |  |  |  |  |  |  |  |  |  |  |  |
| EK000I1160 |  | 020 Wedge Flow Meters - D/S | 15d | 2005-10-13 A | 2005-12-16 A | EK000SY126 | 100% | 2005-10-13 | 2005-11-02 | 2006-07-29 | 0 | 0 | 02 | EK | I21 | 020 | IC | I2116 | IR | I | X | E | Copy |  |  |  |  |  |  |  |  |  |  |  |  |  |
| EK000I1271 |  | Magnetic Flow Meters Purchase ERW | 5d | 2005-10-25 A | 2005-11-01 A | EK000I1270 SS | 100% | 2005-11-24 | 2005-11-30 | 2006-07-29 | 0 | 0 | 02 | EK | I21 | 020 | IC | I2127 | IR | I | N | E | Copy |  |  |  | F |  |  |  |  |  |  |  |  |  |
| EK000I1105 |  | 020 Orific Plates - Purchase ERW | 5d | 2006-01-16 A | 2006-01-26 A | EK000I1100 | 100% | 2006-01-16 | 2006-01-20 | 2006-07-29 | 0 | 0 | 02 | EK | I21 | 020 | IC | I2110 | IR | I | N | E | Copy |  |  |  | F |  |  |  |  |  |  |  |  |  |
| EK000I2305 |  | On/Off Valves - Purchase ERW | 5d | 2006-01-18 A | 2006-06-20 A | EK000I2300 | 100% | 2006-01-31 | 2006-02-06 | 2006-07-29 | 0 | 0 | 02 | EK | I22 | 020 | IC | I2230 | IR | I | N | E | Copy |  |  |  | F |  |  |  |  |  |  |  |  |  |
| EK000I1221 |  | Coriolis Meters - Purchase ERW | 5d | 2006-02-01 A | 2006-04-11 A | EK000I1220 | 100% | 2006-02-03 | 2006-02-09 | 2006-07-29 | 0 | 0 | 02 | EK | I21 | 020 | IC | I2122 | IR | I | N | E | Copy |  |  |  | F |  |  |  |  |  |  |  |  |  |
| EK02AIC300 |  | 02A In Line Instrument Approved Vendor Data | 20d | 2006-02-01 A | 2006-05-15 A | EK020IC210 SS, EK000I2300, EK000I1100, EK000I1121, EK000I1160 | 100% | 2005-11-03 | 2005-11-30 | 2006-07-29 | 0 | 0 | 02 | EK | I00 | 02A | IC |  |  | I |  | E |  | 29 | 30 | 35 |  | X | 06 |  |  |  |  |  |  |  |
| EK02BIC300 |  | 02B In Line Instrument Approved Vendor Data | 20d | 2006-02-01 A | 2006-04-04 A | EK020IC210 SS, EK000I2300, EK000I1100, EK000I1121, EK000I1160 | 100% | 2005-11-03 | 2005-11-30 | 2006-07-29 | 0 | 2.4 | 02 | EK | I00 | 02B | IC |  |  | I |  | E |  | 20 | 21 | 33 |  |  | 06 |  |  |  |  |  |  |  |
| EK02CIC300 |  | 02C In Line Instrument Approved Vendor Data | 20d | 2006-02-01 A | 2006-06-21 A | EK020IC210 SS, EK000I2300, EK000I1100, EK000I1121, EK000I1160 | 100% | 2005-11-03 | 2005-11-30 | 2006-07-29 | 0 | 0 | 02 | EK | I00 | 02C | IC |  |  | I |  | E |  | 65 | 77 | 82 |  | X | 06 | Still waiting on process dara for FV1059. |  |  |  |  |  |  |
| EK02DIC300 |  | 02D In Line Instrument Approved Vendor Data | 20d | 2006-02-01 A | 2006-05-15 A | EK020IC210 SS, EK000I2300, EK000I1100, EK000I1121, EK000I1160 | 100% | 2005-11-03 | 2005-11-30 | 2006-07-29 | 0 | 1.8 | 02 | EK | I00 | 02D | IC |  |  | I |  | E |  | 39 | 41 | 46 |  |  | 06 |  |  |  |  |  |  |  |
| EK02EIC300 |  | 02E In Line Instrument Approved Vendor Data | 20d | 2006-02-01 A | 2006-06-09 A | EK020IC210 SS, EK000I2300, EK000I1100, EK000I1121, EK000I1160 | 100% | 2005-11-03 | 2005-11-30 | 2006-07-29 | 0 | 0 | 02 | EK | I00 | 02E | IC |  |  | I |  | E |  | 34 | 37 | 43 |  |  | 06 |  |  |  |  |  |  |  |
| EK02FIC300 |  | 02F In Line Instrument Approved Vendor Data | 20d | 2006-02-01 A | 2006-06-06 A | EK020IC210 SS, EK000I2300, EK000I1100, EK000I1121, EK000I1160 | 100% | 2005-11-03 | 2005-11-30 | 2006-07-29 | 0 | 1.2 | 02 | EK | I00 | 02F | IC |  |  | I |  | E |  | 45 | 50 | 55 |  |  | 06 |  |  |  |  |  |  |  |
| EK02GIC300 |  | 02G In Line Instrument Approved Vendor Data | 20d | 2006-02-01 A | 2006-06-29 A | EK020IC210 SS, EK000I2300, EK000I1100, EK000I1121, EK000I1160 | 100% | 2005-11-03 | 2005-11-30 | 2006-07-29 | 0 | 3.9 | 02 | EK | I00 | 02G | IC |  |  | I |  | E |  | 80 | 84 | 86 |  |  | 06 |  |  |  |  |  |  |  |
| EK02HIC300 |  | 02H In Line Instrument Approved Vendor Data | 20d | 2006-02-01 A | 2006-06-19 A | EK020IC210 SS, EK000I2300, EK000I1100, EK000I1121, EK000I1160 | 100% | 2005-11-03 | 2005-11-30 | 2006-07-29 | 0 | 3.7 | 02 | EK | I00 | 02H | IC |  |  | I |  | E |  | 65 | 73 | 75 |  |  | 06 | Still waiting on process dara for HCV1270. |  |  |  |  |  |  |
| EK02JIC300 |  | 02J In Line Instrument Approved Vendor Data | 20d | 2006-02-01 A | 2006-06-29 A | EK020IC210 SS, EK000I2300, EK000I1100, EK000I1121, EK000I1160 | 100% | 2005-11-03 | 2005-11-30 | 2006-07-29 | 0 | 0 | 02 | EK | I00 | 02J | IC |  |  | I |  | E |  | 46 | 48 | 53 |  |  | 06 |  |  |  |  |  |  |  |
| EK02KIC300 |  | 02K In Line Instrument Approved Vendor Data | 20d | 2006-02-01 A | 2006-05-31 A | EK020IC210 SS, EK000I2300, EK000I1100, EK000I1121, EK000I1160 | 100% | 2005-11-03 | 2005-11-30 | 2006-07-29 | 0 | 2.6 | 02 | EK | I00 | 02K | IC |  |  | I |  | E |  | 55 | 58 | 63 |  |  | 06 |  |  |  |  |  |  |  |
| EK02LIC300 |  | 02L In Line Instrument Approved Vendor Data | 20d | 2006-02-01 A | 2006-06-20 A | EK020IC210 SS, EK000I2300, EK000I1100, EK000I1121, EK000I1160 | 100% | 2005-11-03 | 2005-11-30 | 2006-07-29 | 0 | 5.8 | 02 | EK | I00 | 02L | IC |  |  | I |  | E |  | 55 | 58 | 63 |  |  | 06 | Still waiting on process dara for LV1004A. |  |  |  |  |  |  |
| EK02MIC300 |  | 02M In Line Instrument Approved Vendor Data | 20d | 2006-02-01 A | 2006-07-19 A | EK020IC210 SS, EK000I2300, EK000I1100, EK000I1121, EK000I1160 | 100% | 2005-11-03 | 2005-11-30 | 2006-07-29 | 0 | 3.7 | 02 | EK | I00 | 02M | IC |  |  | I |  | E |  | 53 | 54 | 59 |  |  | 06 |  |  |  |  |  |  |  |
| EK02NIC300 |  | 02N In Line Instrument Approved Vendor Data | 20d | 2006-02-01 A | 2006-06-16 A | EK020IC210 SS, EK000I2300, EK000I1100, EK000I1121, EK000I1160 | 100% | 2005-11-03 | 2005-11-30 | 2006-07-29 | 0 | 1.2 | 02 | EK | I00 | 02N | IC |  |  | I |  | E |  | 41 | 42 | 53 |  |  | 06 |  |  |  |  |  |  |  |
| EK02PIC300 |  | 02P In Line Instrument Approved Vendor Data | 20d | 2006-02-01 A | 2006-05-15 A | EK020IC210 SS, EK000I2300, EK000I1100, EK000I1121, EK000I1160 | 100% | 2005-11-03 | 2005-11-30 | 2006-07-29 | 0 | 9.5 | 02 | EK | I00 | 02P | IC |  |  | I |  | E |  | 24 | 24 | 35 |  |  | 06 | Waiting on DDP info from suplier for 1 vlv. |  |  |  |  |  |  |
| EK02QIC300 |  | 02Q In Line Instrument Approved Vendor Data | 20d | 2006-02-01 A | 2006-05-25 A | EK020IC210 SS, EK000I2300, EK000I1100, EK000I1121, EK000I1160 | 100% | 2005-11-03 | 2005-11-30 | 2006-07-29 | 0 | 0 | 02 | EK | I00 | 02Q | IC |  |  | I |  | E |  | 23 | 23 | 35 |  |  | 06 | Waiting on sizing from suplier for 1 vlv. |  |  |  |  |  |  |
| EK02UIC300 |  | 02U In Line Instrument Approved Vendor Data | 20d | 2006-02-01 A | 2006-03-24 A | EK020IC210 SS, EK000I2300, EK000I1100, EK000I1121, EK000I1160 | 100% | 2005-11-03 | 2005-11-30 | 2006-07-29 | 0 | 2.6 | 02 | EK | I00 | 02U | IC |  |  | I |  | E |  | 2 | 2 | 10 |  |  | 06 |  |  |  |  |  |  |  |
| EK02YIC300 |  | 02Y In Line Instrument Approved Vendor Data | 20d | 2006-02-01 A | 2006-05-15 A | EK020IC210 SS, EK000I2300, EK000I1100, EK000I1121, EK000I1160 | 100% | 2005-11-03 | 2005-11-30 | 2006-07-29 | 22.4 | 4.7 | 02 | EK | I00 | 02Y | IC |  |  | I |  | E |  | 40 | 45 | 50 |  |  | 06 |  |  |  |  |  |  |  |
| EK020IC213 |  | 020 Control Valves - Purchase ERW | 5d | 2006-02-17 A | 2006-08-14 A | EK020IC210 SS | 100% | 2006-02-13 | 2006-02-17 | 2006-07-29 | 0 | 0 | 02 | EK | I22 | 020 | IC | I2210 | IR | I | N | E | Copy |  |  |  | F |  |  |  |  |  |  |  |  |  |
| EK000I1161 |  | 020 Wedge Flow Meters - Purchase ERW | 5d | 2006-02-27 A | 2006-04-05 A | EK000I1160 | 100% | 2006-02-27 | 2006-03-03 | 2006-07-29 | 0 | 0 | 02 | EK | I21 | 020 | IC | I2116 | IR | I | N | E | Copy |  |  |  | F |  |  |  |  |  |  |  |  |  |
| EK02DIC120 |  | 02D Instrument Detail Model / Review | 65d | 2006-03-13 A | 2006-05-18 A | EM02DPI134 FF | 100% | 2006-03-13 | 2006-06-09 | 2006-07-29 | 0 | 0 | 02 | EK | ID1 | 02D | IC |  |  | I | X | E |  |  |  |  |  |  |  | FF with 02D Detail Model Development | 120 | 02D | IC120 | 33 | 26 | E4B4 |
| EK02EIC120 |  | 02E Instrument Detail Model / Review | 45d | 2006-03-13 A | 2006-06-21 A | EM02EPI134 FF | 100% | 2006-03-13 | 2006-05-12 | 2006-07-29 | 0 | 0 | 02 | EK | ID1 | 02E | IC |  |  | I | X | E |  |  |  |  |  |  |  |  | 120 | 02E | IC120 | 32 | 15 | E4B4 |
| EK02HIC120 |  | 02H Instrument Detail Model / Review | 90d | 2006-03-13 A | 2006-07-19 A | EM02HPI134 FF | 100% | 2006-03-13 | 2006-07-14 | 2006-07-29 | 0 | 0 | 02 | EK | ID1 | 02H | IC |  |  | I | X | E |  |  |  |  |  |  |  |  | 120 | 02H | IC120 | 11 | 20 | E4B4 |
| EK02JIC120 |  | 02J Instrument Detail Model / Review | 95d | 2006-03-13 A | 2006-06-19 A | EM02JPI134 FF | 100% | 2006-03-13 | 2006-07-21 | 2006-07-29 | 0 | 0 | 02 | EK | ID1 | 02J | IC |  |  | I | X | E |  |  |  |  |  |  |  |  | 120 | 02J | IC120 | 18 | 30 | E4B4 |
| EK02KIC120 |  | 02K Instrument Detail Model / Review | 67d | 2006-03-13 A | 2006-06-19 A | EM02KPI134 SS | 100% | 2006-03-13 | 2006-06-13 | 2006-07-29 | 0 | 0 | 02 | EK | ID1 | 02K | IC |  |  | I | X | E |  |  |  |  |  |  |  |  | 120 | 02K | IC120 | 19 | 17 | E4B4 |
| EK02LIC120 |  | 02L Instrument Detail Model / Review | 80d | 2006-03-13 A | 2006-06-22 A | EM02LPI134 FF | 100% | 2006-03-13 | 2006-06-30 | 2006-07-29 | 0 | 0 | 02 | EK | ID1 | 02L | IC |  |  | I | X | E |  |  |  |  |  |  |  | 02L Detail Model Development | 120 |  |  | 23 | 19 | E4B4 |
| EK02MIC120 |  | 02M Instrument Detail Model / Review | 80d | 2006-03-13 A | 2006-06-29 A | EM02MPI134 FF | 100% | 2006-03-13 | 2006-06-30 | 2006-07-29 | 0 | 0 | 02 | EK | ID1 | 02M | IC |  |  | I | X | E |  |  |  |  |  |  |  | 02M Detail Model Development | 120 | 02M | IC120 | 24 | 28 | E4B4 |
| EK02QIC120 |  | 02Q Instrument Detail Model / Review | 30d | 2006-03-13 A | 2006-06-21 A | EM02QPI134 SS | 100% | 2006-03-13 | 2006-04-21 | 2006-07-29 | 0 | 0 | 02 | EK | ID1 | 02Q | IC |  |  | I | X | E |  |  |  |  |  |  |  | 02Q Detail Model Development | 120 | 02Q | IC120 | 41 | 35 | E4B4 |
| EK02BIC120 |  | 02B Instrument Detail Model / Review | 25d | 2006-03-14 A | 2006-04-12 A | EM02BPI134 FF | 100% | 2006-03-14 | 2006-04-17 | 2006-07-29 | 0 | 0 | 02 | EK | ID1 | 02B | IC |  |  | I |  | E |  |  |  |  |  |  |  |  | 120 | 02B | IC120 | 34 | 34 | E4B4 |
| EK02PIC120 |  | 02P Instrument Detail Model / Review | 25d | 2006-03-15 A | 2006-04-20 A | EM02PPI134 FF | 100% | 2006-03-15 | 2006-04-18 | 2006-07-29 | 0 | 0 | 02 | EK | ID1 | 02P | IC |  |  | I | X | E |  |  |  |  |  |  |  |  | 120 | 02P | IC120 | 40 | 36 | E4B4 |
| EK02NIC120 |  | 02N Instrument Detail Model / Review | 35d | 2006-03-27 A | 2006-05-15 A | EM02NPI134 FF | 100% | 2006-03-27 | 2006-05-12 | 2006-07-29 | 0 | 0 | 02 | EK | ID1 | 02N | IC |  |  | I | X | E |  |  |  |  |  |  |  |  | 120 | 02N | IC120 | 39 | 37 | E4B4 |
| EK020I131A |  | Develop / Issue Purchase ERW -Transmitter ISBL | 37d | 2006-04-03 A | 2006-07-13 A | PK000I131K | 100% | 2006-04-03 | 2006-05-23 | 2006-07-29 | 0 | 0 | 02 | EK | I13 | 020 | IC | I1310 |  | I |  | E |  |  |  |  | F |  |  |  |  |  |  |  |  |  |
| EK02CIC120 |  | 02C Instrument Detail Model / Review | 70d | 2006-04-10 A | 2006-06-29 A | EM02CPI134 FF | 100% | 2006-04-10 | 2006-07-14 | 2006-07-29 | 0 | 0 | 02 | EK | ID1 | 02C | IC |  |  | I | X | E |  |  |  |  |  |  |  |  | 120 | 02C | IC120 | 14 | 21 | E4B4 |
| EK02YIC120 |  | 02Y Instrument Detail Model / Review | 35d | 2006-04-10 A | 2006-05-17 A | EM02YPI134 FF | 100% | 2006-04-10 | 2006-05-26 | 2006-07-29 | 0 | 0 | 02 | EK | ID1 | 02Y | IC |  |  | I | X | E |  |  |  |  |  |  |  |  | 120 | 02Y | IC120 | 8 | 9 | E4B4 |
| EK000I617A |  | Develop / Issue Purchase ERW - Magnetic Lvl Gauges | 36d | 2006-04-12 A | 2006-06-05 A | EK020SY050, PK000I617K | 100% | 2006-04-12 | 2006-05-31 | 2006-07-29 | 0 | 0 | 02 | EK | I16 | 020 | IC | I1617 |  | I |  | E |  |  |  |  | F |  |  | Need piping center lines on knock out pipes |  |  |  |  |  |  |
| EK000I616A |  | Develop / Issue Purchase ERW - Steam Drum Lvl Gauges - ISBL | 36d | 2006-04-21 A | 2006-06-12 A | EK020SY050, PK000I616K | 100% | 2006-04-21 | 2006-06-09 | 2006-07-29 | 0 | 0 | 02 | EK | I16 | 020 | IC | I1616 |  | I |  | E |  |  |  |  | F |  |  |  |  |  |  |  |  |  |
| EK000I1122 |  | 020 Venturis - Purchase ERW | 5d | 2006-05-01 A | 2006-06-20 A | EK000I1121 | 100% | 2006-05-01 | 2006-05-05 | 2006-07-29 | 0 | 0 | 02 | EK | I21 | 020 | IC | I2112 | IR | I | N | E | Copy |  |  |  | F |  |  | Need OE status update. |  |  |  |  |  |  |
| EK000I623A |  | Develop / Issue Purchase ERW -Multi-Point Thermocouples - ISBL | 36d | 2006-05-01 A | 2006-06-26 A | EK020SY050, PK000I623K | 100% | 2006-05-01 | 2006-06-19 | 2006-07-29 | 0 | 0 | 02 | EK | I16 | 020 | IC | I1623 |  | I |  | E |  |  |  |  | F |  |  |  |  |  |  |  |  |  |
| EK02AIC120 |  | 02A Instrument Detail Model / Review | 40d | 2006-05-01 A | 2006-05-25 A | EM02API134 SS | 100% | 2006-05-01 | 2006-06-23 | 2006-07-29 | 0 | 0 | 02 | EK | ID1 | 02A | IC |  |  | I | X | E |  |  |  |  |  |  |  |  | 120 | 02A | IC120 | 36 | 25 | E4B4 |
| EK000I621A |  | Develop / Issue Purchase ERW - Temperature Elements - ISBL | 36d | 2006-05-08 A | 2006-07-24 A | EK020SY050, PK000I621K | 100% | 2006-05-08 | 2006-06-26 | 2006-07-29 | 0 | 0 | 02 | EK | I16 | 020 | IC | I1621 |  | I |  | E |  | 33 | 36 | 42 | F |  |  |  |  |  |  |  |  |  |
| EK000I611A |  | Develop / Issue Purchase ERW - Pressure Gauges - ISBL | 36d | 2006-05-19 A | 2006-08-09 A | EK020SY050, PK000I611K | 100% | 2006-05-19 | 2006-07-07 | 2006-07-29 | 0 | 0 | 02 | EK | I16 | 020 | IC | I1611 |  | I |  | E |  |  |  |  | F |  |  |  |  |  |  |  |  |  |
| EK02FIC120 |  | 02F Instrument Detail Model / Review | 35d | 2006-05-22 A | 2006-06-22 A | EM02FPI134 FF | 100% | 2006-05-22 | 2006-07-07 | 2006-07-29 | 0 | 0 | 02 | EK | ID1 | 02F | IC |  |  | I | X | E |  |  |  |  |  |  |  |  | 120 | 02F | IC120 | 29 | 16 | E4B4 |
| EK02GIC120 |  | 02G Instrument Detail Model / Review | 60d | 2006-05-23 A | 2006-06-29 A | EM02GPI134 SS | 100% | 2006-05-23 | 2006-08-14 | 2006-07-29 | 0 | 0 | 02 | EK | ID1 | 02G | IC |  |  | I | X | E |  |  |  |  |  |  |  | Piping Detail Mod. Develop. not complete untill 1-Sep. | 120 | 02G | IC120 | 9 | 22 | E4B4 |
| EK000I612A |  | Develop / Issue Purchase ERW - Differential Pressure Gauges | 36d | 2006-05-26 A | 2006-07-27 A | EK020SY050, PK000I612K | 100% | 2006-05-26 | 2006-07-14 | 2006-07-29 | 0 | 0 | 02 | EK | I16 | 020 | IC | I1612 |  | I |  | E |  |  |  |  | F |  |  |  |  |  |  |  |  |  |

| ID | WBS | Activity | Duration | Start | Finish | Predecessors | Complete | Planned start | Planned finish | Calendar | zData Date | PCA Criticality Index | PCA Duration Sensitivity | EB02 - UNIT | EB01 - RESP | EB06 - WORK OP | EB03 - AREA | EB05 - DISCIPLINE | EB07 - REQN | EB10 - KEY | EB04 - CLASS | EB11 - FLAG | EB09 - IPMS | EB00 - EPC | EB15 - Civil / U/G Path of Construction | EB16 - Piping Path of Construction | EB17 - Suffix | EB08 - TAG | EB14 - RISK | user_integer2 | Optimistic Duration | Most Likely Duration | Pessimistic Duration | EB21 - Rev 2 Risk Associations |
| --- | --- | --- | --- | --- | --- | --- | --- | --- | --- | --- | --- | --- | --- | --- | --- | --- | --- | --- | --- | --- | --- | --- | --- | --- | --- | --- | --- | --- | --- | --- | --- | --- | --- | --- |
|  | MB | **Furnaces & Flares Engineering** |  | 2005-03-21 | 2006-07-07 |  |  |  |  |  |  |  |  |  |  |  |  |  |  |  |  |  |  |  |  |  |  |  |  |  |  |  |  |  |
| EK000MB065 |  | 102-B Start-up Heater Prelim Data Sheets & ERW | 20d | 2005-03-21 A | 2005-03-25 A | EK000MB33A | 100% | 2005-03-21 | 2005-04-15 |  | 2006-07-29 | 0 | 0 | 02 | EK | MB8 | 02M | MB | MB810 | PE | M | X | A | E | 24 | 28 | E1B1 |  |  |  |  |  |  |  |
| EK000MB33B |  | 101-B Develop & Issue Design Data | 20d | 2005-03-21 A | 2005-04-12 A | EK000MB33A | 100% | 2005-03-21 | 2005-04-15 |  | 2006-07-29 | 0 | 0 | 02 | EK | MB3 | 02H | MB | MB101 | CE | M | X |  | E |  |  | E1B1 | 101B |  |  |  |  |  |  |
| EK000MB81C |  | Prepare & Issue Prelim. RFQ - MB810 to Proc. | 3d | 2005-03-23 A | 2005-03-25 A | EK000MB065 FF | 100% |  |  |  | 2006-07-29 | 0 | 0 | 02 | EK | MB8 | 02M | MB | MB810 | CE | M | X | A | E | 24 | 28 | E1B1 |  |  |  |  |  |  |  |
| EK000MB015 |  | 101-B API Furnace Data Sheets | 10d | 2005-04-08 A | 2005-04-21 A | EK000MB010 SS | 100% |  |  |  | 2006-07-29 | 0 | 0 | 02 | EK | MB9 | 02H | MB | MB101 |  | M | X |  | E |  |  |  | 101B | 04 |  |  |  |  |  |
| EK000MB025 |  | Air Preheater data sheets | 10d | 2005-04-11 A | 2005-04-21 A | EK000MB020 | 100% | 2005-05-27 | 2005-06-10 |  | 2006-07-29 | 0 | 0 | 02 | EK | MB6 | 02H | MB | MB630 |  | M | X | A | E |  |  |  |  | 04 |  |  |  |  |  |
| EK000MB020 |  | Burner Data Sheets | 10d | 2005-04-18 A | 2005-04-21 A | EK000MB015 | 100% | 2005-05-20 | 2005-06-03 |  | 2006-07-29 | 0 | 0 | 02 | EK | MB6 | 02H | MB | MB610 |  | M | X | A | E |  |  |  |  | 04 |  |  |  |  |  |
| EK000MB81F |  | Prepare & Issue Purchase ERW - MB810 | 20d | 2005-04-22 A | 2005-06-24 A | EK000MB81A, EK000MB81C | 100% | 2005-04-22 | 2005-05-19 |  | 2006-07-29 | 0 | 0 | 02 | EK | MB8 | 02M | MB | MB810 | CE | M | X | A | E | 24 | 28 | E1B1 |  |  |  |  |  |  |  |
| EK000MB81D |  | Technical Evaluation - MB810 | 5d | 2005-04-28 A | 2005-05-04 A | PK000MB81H | 100% |  |  |  | 2006-07-29 | 0 | 0 | 02 | EK | MB8 | 02M | MB | MB810 | CE | M | X | D | E | 24 | 28 | E1B1 |  |  |  |  |  |  |  |
| EK000MB030 |  | ID & FD fan data sheets | 10d | 2005-05-02 A | 2005-05-13 A | EK000MB025 | 100% | 2005-06-07 | 2005-06-20 |  | 2006-07-29 | 0 | 0 | 02 | EK | MB6 | 02H | MB | MB621 |  | M | X | A | E |  |  |  |  | 04 |  |  |  |  |  |
| EK000MB035 |  | 101-B Damper & Expansion joint data sheets | 11d | 2005-05-31 A | 2005-06-24 A | EK000MB030 | 100% | 2005-06-13 | 2005-06-27 |  | 2006-07-29 | 0 | 0 | 02 | EK | MB9 | 02H | MB | MB101 |  | M | X |  | E |  |  |  | 101B | 04 |  |  |  |  |  |
| EK000MB040 |  | Penthouse fan data sheets | 5d | 2005-05-31 A | 2005-06-24 A | EK000MB035 | 100% | 2005-06-28 | 2005-07-06 |  | 2006-07-29 | 0 | 0 | 02 | EK | MB6 | 02H | MB | MB622 |  | M | X |  | E |  |  |  |  | 04 |  |  |  |  |  |
| PK000MB61N |  | Recv. Planning V. Data MB610 | 20d | 2005-09-12 A | 2005-10-31 A | PK000MB61J | 100% | 2005-10-17 | 2005-11-11 |  | 2006-07-29 | 0 | 0 | 02 | EK | MB6 | 02H | MB | MB610 | P15 | M | X | J | E |  |  |  |  |  | 20 |  |  |  |  |
| PK000MB62N |  | Recv. Planning V. Data MB621 | 20d | 2005-09-12 A | 2006-01-16 A | PK000MB62J | 100% | 2005-10-17 | 2005-11-11 |  | 2006-07-29 | 0 | 0 | 02 | EK | MB6 | 02H | MB | MB621 | P15 | M |  | J | E |  |  |  |  |  | 20 |  |  |  |  |
| PK000MB63N |  | Recv. Planning V. Data MB630 | 20d | 2005-09-12 A | 2005-10-28 A | PK000MB63J | 100% | 2005-10-17 | 2005-11-11 |  | 2006-07-29 | 0 | 0 | 02 | EK | MB6 | 02H | MB | MB630 | P15 | M | X | J | E |  |  |  |  | 04 | 20 |  |  |  |  |
| PK000MB81N |  | 02M MB810 102-B Startup Heater Planning V. Data | 20d | 2005-09-12 A | 2005-11-09 A | PK000MB81J | 100% | 2005-10-17 | 2005-11-11 |  | 2006-07-29 | 0 | 0 | 02 | EK | MB8 | 02M | MB | MB810 | P15 | M | X | J | E | 24 | 28 | E1B1 | 102B |  |  |  |  |  |  |
| PK02HMB32 |  | 02H MB610 101-BA/B/C - Piping Prod. V. Data | 35d | 2005-10-31 A | 2005-12-19 A | PK000MBP1J | 100% | 2005-10-31 | 2005-12-16 | EBWK - Global | 2006-07-29 | 0 | 0 | 02 | EK | MB6 | 02H | MB | MB610 |  | M |  | M | E |  |  |  | X |  |  |  |  |  |  |
| PK02HMB33 |  | 02H MB610 101-BA/B/C - Civil Prod. V. Data | 35d | 2005-10-31 A | 2005-12-19 A | PK000MBP1J | 100% | 2005-10-31 | 2005-12-16 | EBWK - Global | 2006-07-29 | 0 | 0 | 02 | EK | MB6 | 02H | MB | MB610 |  | M |  | M | E |  |  |  | X |  |  |  |  |  |  |
| PK02HMB34 |  | 02H MB610 101-BA/B/C - E&I Prod. V. Data | 35d | 2005-10-31 A | 2005-12-19 A | PK000MBP1J | 100% | 2005-10-31 | 2005-12-16 | EBWK - Global | 2006-07-29 | 0 | 0 | 02 | EK | MB6 | 02H | MB | MB610 |  | M |  | M | E |  |  |  | X |  |  |  |  |  |  |
| PK02HMB19 |  | 02H MB221 101-B - Piping Prod. V. Data | 35d | 2005-11-01 A | 2005-11-18 A | PK000MBP1J | 100% | 2006-01-30 | 2006-03-17 | EBWK - Global | 2006-07-29 | 0 | 0 | 02 | EK | MB2 | 02H | MB | MB221 |  | M |  | M | E |  |  |  | X |  |  |  |  |  |  |
| PK02HMB20 |  | 02H MB221 101-B - Civil Prod. V. Data | 35d | 2005-11-01 A | 2005-11-18 A | PK000MBP1J | 100% | 2006-01-30 | 2006-03-17 | EBWK - Global | 2006-07-29 | 0 | 0 | 02 | EK | MB2 | 02H | MB | MB221 |  | M |  | M | E |  |  |  | X |  |  |  |  |  |  |
| PK02HMB21 |  | 02H MB221 101-B - E&I Prod. V. Data | 35d | 2005-11-01 A | 2005-11-18 A | PK000MBP1J | 100% | 2006-01-30 | 2006-03-17 | EBWK - Global | 2006-07-29 | 0 | 0 | 02 | EK | MB2 | 02H | MB | MB221 |  | M |  | M | E |  |  |  | X |  |  |  |  |  |  |
| PK02MMB02 |  | 02M MB810 102-B - Piping Prod. V. Data | 35d | 2005-11-10 A | 2006-01-10 A | PK000MB81N, PK000MB81J | 100% | 2006-01-30 | 2006-03-17 | EBWK - Global | 2006-07-29 | 0 | 0 | 02 | EK | MB8 | 02M | MB | MB810 |  | M |  | M | E |  |  |  | X |  |  |  |  |  |  |
| PK02MMB03 |  | 02M MB810 102-B - Civil Prod. V. Data | 35d | 2005-11-10 A | 2006-01-10 A | PK000MB81N, PK000MB81J | 100% | 2006-01-30 | 2006-03-17 | EBWK - Global | 2006-07-29 | 0 | 0 | 02 | EK | MB8 | 02M | MB | MB810 |  | M |  | M | E |  |  |  | X |  |  |  |  |  |  |
| PK02MMB04 |  | 02M MB810 102-B - E&I Prod. V. Data | 35d | 2005-11-10 A | 2006-01-10 A | PK000MB81N, PK000MB81J | 100% | 2006-01-30 | 2006-03-17 | EBWK - Global | 2006-07-29 | 0 | 0 | 02 | EK | MB8 | 02M | MB | MB810 |  | M |  | M | E |  |  |  | X |  |  |  |  |  |  |
| PK000MB21N |  | Recv. Planning V. Data MB212 | 20d | 2005-12-08 A | 2006-01-09 A | PK000MB21J | 100% | 2006-02-06 | 2006-03-03 |  | 2006-07-29 | 0 | 0 | 02 | EK | MB2 | 02H | MB | MB212 | P15 | M |  | J | E |  |  |  |  |  | 20 |  |  |  |  |
| PK02HMB35 |  | 02H MB621 101-B I.D. & F.D. Fans - Piping Prod. V. Data | 35d | 2006-01-16 A | 2006-02-08 A | PK000MB62J, PK000MB62N | 100% | 2006-01-16 | 2006-03-03 | EBWK - Global | 2006-07-29 | 0 | 0 | 02 | EK | MB6 | 02H | MB | MB621 |  | M |  | M | E |  |  |  | X |  |  |  |  |  |  |
| PK02HMB36 |  | 02H MB621 101-B I.D. & F.D. Fans - Civil Prod. V. Data | 35d | 2006-01-16 A | 2006-02-08 A | PK000MB62J, PK000MB62N | 100% | 2006-01-16 | 2006-03-03 | EBWK - Global | 2006-07-29 | 0 | 0 | 02 | EK | MB6 | 02H | MB | MB621 |  | M |  | M | E |  |  |  | X |  |  |  |  |  |  |
| PK02HMB37 |  | 02H MB621 101-B I.D. & F.D. Fans - E&I Prod. V. Data | 35d | 2006-01-16 A | 2006-02-08 A | PK000MB62J, PK000MB62N | 100% | 2006-01-16 | 2006-03-03 | EBWK - Global | 2006-07-29 | 0 | 0 | 02 | EK | MB6 | 02H | MB | MB621 |  | M |  | M | E |  |  |  | X |  |  |  |  |  |  |
| PK02HMB41 |  | 02H MB630 101-BL1 Combustion Air Preheater - Piping Prod. V. Data | 35d | 2006-01-30 A | 2006-01-30 A | PK000MB63J | 100% | 2006-01-30 | 2006-03-17 | EBWK - Global | 2006-07-29 | 0 | 0 | 02 | EK | MB6 | 02H | MB | MB630 |  | M |  | M | E |  |  |  | X |  |  |  |  |  |  |
| PK02HMB42 |  | 02H MB630 101-BL1 Combustion Air Preheater - Civil Prod. V. Data | 35d | 2006-01-30 A | 2006-01-30 A | PK000MB63J | 100% | 2006-01-30 | 2006-03-17 | EBWK - Global | 2006-07-29 | 0 | 0 | 02 | EK | MB6 | 02H | MB | MB630 |  | M |  | M | E |  |  |  | X |  |  |  |  |  |  |
| PK02HMB43 |  | 02H MB630 101-BL1 Combustion Air Preheater - E&I Prod. V. Data | 35d | 2006-01-30 A | 2006-01-30 A | PK000MB63J | 100% | 2006-01-30 | 2006-03-17 | EBWK - Global | 2006-07-29 | 0 | 0 | 02 | EK | MB6 | 02H | MB | MB630 |  | M |  | M | E |  |  |  | X |  |  |  |  |  |  |
| PK02HMB38 |  | 02H MB622 101-B - Piping Prod. V. Data | 35d | 2006-02-06 A | 2006-06-15 A | PK000MB65J | 100% | 2006-01-30 | 2006-03-17 | EBWK - Global | 2006-07-29 | 0 | 0 | 02 | EK | MB6 | 02H | MB | MB622 |  | M |  | M | E |  |  |  | X |  |  |  |  |  |  |
| PK02HMB39 |  | 02H MB622 101-B - Civil Prod. V. Data | 35d | 2006-02-06 A | 2006-07-07 A | PK000MB65J | 100% | 2006-01-30 | 2006-03-17 | EBWK - Global | 2006-07-29 | 0 | 0 | 02 | EK | MB6 | 02H | MB | MB622 |  | M |  | M | E |  |  |  | X |  |  |  |  |  |  |
| PK02HMB40 |  | 02H MB622 101-B - E&I Prod. V. Data | 35d | 2006-02-06 A | 2006-07-07 A | PK000MB65J | 100% | 2006-01-30 | 2006-03-17 | EBWK - Global | 2006-07-29 | 0 | 0 | 02 | EK | MB6 | 02H | MB | MB622 |  | M |  | M | E |  |  |  | X |  |  |  |  |  |  |
| PK02HMB50 |  | 02H MB692 101-BL2 - Piping Prod. V. Data | 35d | 2006-05-01 A | 2006-06-26 A | PK000MB69J | 100% | 2006-05-01 | 2006-06-16 | EBWK - Global | 2006-07-29 | 0 | 0 | 02 | EK | MB6 | 02H | MB | MB692 |  | M |  | M | E |  |  |  | X |  |  | 30 | 35 | 45 | 06 |
| PK02HMB51 |  | 02H MB692 101-BL2 - Civil Prod. V. Data | 35d | 2006-05-01 A | 2006-06-26 A | PK000MB69J | 100% | 2006-05-01 | 2006-06-16 | EBWK - Global | 2006-07-29 | 0 | 0 | 02 | EK | MB6 | 02H | MB | MB692 |  | M |  | M | E |  |  |  | X |  |  | 30 | 35 | 45 | 06 |
| PK02HMB52 |  | 02H MB692 101-BL2 - E&I Prod. V. Data | 35d | 2006-05-01 A | 2006-06-26 A | PK000MB69J | 100% | 2006-05-01 | 2006-06-16 | EBWK - Global | 2006-07-29 | 0 | 0 | 02 | EK | MB6 | 02H | MB | MB692 |  | M |  | M | E |  |  |  | X |  |  | 30 | 35 | 45 | 06 |

Notes:
- EK000MB33B: P3 Activity Log Info: ACTUAL
- EK000MB81C: P3 Activity Log Info: Utilize FMCL as Basis for ERW's

| ID | WBS | Activity | Duration | Start | Finish | Predecessors | Complete | Planned start | Planned finish | Calendar | zData Date | PCA Criticality Index | PCA Duration Sensitivity | EB02 - UNIT | EB01 - RESP | EB06 - WORK OP | EB03 - AREA | EB05 - DISCIPLINE | EB07 - REQN | EB04 - CLASS | EB11 - FLAG | EB09 - IPMS | EB00 - EPC | EB15 - Civil / U/G Path of Construction | EB16 - Piping Path of Construction | EB17 - Suffix | Sequence | User Defined Field 1 | User Definer Field 2 | EB08 - TAG | EB21 - Rev 2 Risk Associations | Optimistic Duration | Most Likely Duration | Pessimistic Duration |
| --- | --- | --- | --- | --- | --- | --- | --- | --- | --- | --- | --- | --- | --- | --- | --- | --- | --- | --- | --- | --- | --- | --- | --- | --- | --- | --- | --- | --- | --- | --- | --- | --- | --- | --- |
|  | MC | **Exchangers Engineering** |  | 2005-06-28 | 2006-06-23 |  |  |  |  |  |  |  |  |  |  |  |  |  |  |  |  |  |  |  |  |  |  |  |  |  |  |  |  |  |
| PK02HMC116 |  | 02H Exchangers - Recv/Accepted Planning Data | 1d | 2005-06-28 A | 2005-06-28 A | EK000MC31P | 100% |  |  |  | 2006-07-29 | 0 | 0 | 02 | EK | MC3 | 02H | MC | P1000 | M | X | J | E | 11 | 20 | E1B1 |  |  |  |  |  |  |  |  |
| PK02CMC116 |  | 02C Exchangers - Recv/Accepted Planning Data | 1d | 2005-07-21 A | 2005-07-21 A | EK000MC21P | 100% | 2005-07-12 | 2005-07-12 |  | 2006-07-29 | 0 | 0 | 02 | EK | MC2 | 02C | MC | P1000 | M | X | J | E | 14 | 21 | E1B1 |  |  |  |  |  |  |  |  |
| PK02DMC116 |  | 02D Exchangers - Recv/Accepted Planning Data | 1d | 2005-07-21 A | 2005-07-21 A | EK000MC21P | 100% | 2005-07-12 | 2005-07-12 |  | 2006-07-29 | 0 | 0 | 02 | EK | MC2 | 02D | MC | P1000 | M | X | J | E | 33 | 26 | E1B1 | 116 | 02D | MC116 |  |  |  |  |  |
| PK02EMC116 |  | 02E Exchangers - Recv/Accepted Planning Data | 1d | 2005-07-21 A | 2005-07-21 A | EK000MC21P, EK000MC23P | 100% | 2005-07-12 | 2005-07-12 |  | 2006-07-29 | 0 | 0 | 02 | EK | MC2 | 02E | MC | P1000 | M |  | J | E | 32 | 15 | E1B1 | 116 | 02E | MC116 |  |  |  |  |  |
| PK02JMC116 |  | 02J Exchangers - Recv/Accepted Planning Data | 1d | 2005-07-21 A | 2005-07-21 A | EK000MC21P, EK000MC32P | 100% | 2005-07-18 | 2005-07-18 |  | 2006-07-29 | 0 | 0 | 02 | EK | MC3 | 02J | MC | P1000 | M | X | J | E | 18 | 30 | E1B1 | 116 | 02J | MC116 |  |  |  |  |  |
| PK02LMC116 |  | 02L Exchangers - Recv/Accepted Planning Data | 1d | 2005-07-21 A | 2005-07-21 A | EK000MC21P, EK000MC23P | 100% | 2005-07-12 | 2005-07-12 |  | 2006-07-29 | 0 | 0 | 02 | EK | MC2 | 02L | MC | P1000 | M |  | J | E | 23 | 19 | E1B1 | 116 |  |  |  |  |  |  |  |
| PK02MMC116 |  | 02M Exchangers - Recv/Accepted Planning Data | 1d | 2005-07-21 A | 2005-07-21 A | EK000MC21P, EK000MC32P | 100% | 2005-07-18 | 2005-07-18 |  | 2006-07-29 | 0 | 0 | 02 | EK | MC2 | 02M | MC | P1000 | M | X | J | E | 24 | 28 | E1B1 | 116 | 02M | MC116 |  |  |  |  |  |
| PK02NMC116 |  | 02N Exchangers - Recv/Accepted Planning Data | 1d | 2005-07-21 A | 2005-07-21 A | EK000MC32P | 100% | 2005-07-18 | 2005-07-18 |  | 2006-07-29 | 0 | 0 | 02 | EK | MC2 | 02N | MC | P1000 | M | X | J | E | 39 | 37 | E1B1 | 116 | 03U | MC116 |  |  |  |  |  |
| ZZ1940 |  | 02M MC312 121-C - Piping Prod. V. Data | 35d | 2005-11-08 A | 2005-12-28 A | PK020MC31G | 100% | 2005-11-08 | 2005-12-26 | EBWK - Global | 2006-07-29 | 0 | 0 | 02 | EK | MC3 | 02M | MC | MC312 | M |  | M | E |  |  |  |  |  |  | X |  |  |  |  |
| ZZ1950 |  | 02M MC312 121-C - Civil Prod. V. Data | 35d | 2005-11-08 A | 2005-12-28 A | PK020MC31G | 100% | 2005-11-08 | 2005-12-26 | EBWK - Global | 2006-07-29 | 0 | 0 | 02 | EK | MC3 | 02M | MC | MC312 | M |  | M | E |  |  |  |  |  |  | X |  |  |  |  |
| ZZ1960 |  | 02M MC312 121-C - E&I Prod. V. Data | 35d | 2005-11-08 A | 2005-12-28 A | PK020MC31G | 100% | 2005-11-08 | 2005-12-26 | EBWK - Global | 2006-07-29 | 0 | 0 | 02 | EK | MC3 | 02M | MC | MC312 | M |  | M | E |  |  |  |  |  |  | X |  |  |  |  |
| ZZ2000 |  | 02N MC312 120-C,CF1,CF2,CF3,CF4 - Piping Prod. V. Data | 35d | 2005-11-08 A | 2005-12-28 A | PK020MC31G | 100% | 2005-11-08 | 2005-12-26 | EBWK - Global | 2006-07-29 | 0 | 0 | 02 | EK | MC3 | 02N | MC | MC312 | M |  | M | E |  |  |  |  |  |  | X |  |  |  |  |
| ZZ2010 |  | 02N MC312 120-C,CF1,CF2,CF3,CF4 - Civil Prod. V. Data | 35d | 2005-11-08 A | 2005-12-28 A | PK020MC31G | 100% | 2005-11-08 | 2005-12-26 | EBWK - Global | 2006-07-29 | 0 | 0 | 02 | EK | MC3 | 02N | MC | MC312 | M |  | M | E |  |  |  |  |  |  | X |  |  |  |  |
| ZZ2020 |  | 02N MC312 120-C,CF1,CF2,CF3,CF4 - E&I Prod. V. Data | 35d | 2005-11-08 A | 2005-12-28 A | PK020MC31G | 100% | 2005-11-08 | 2005-12-26 | EBWK - Global | 2006-07-29 | 0 | 0 | 02 | EK | MC3 | 02N | MC | MC312 | M |  | M | E |  |  |  |  |  |  | X |  |  |  |  |
| PK02AMC14 |  | 02A MC210 160-C - Piping Prod. V. Data | 35d | 2005-11-09 A | 2006-06-05 A | PK000MC21J | 100% | 2005-11-09 | 2005-12-27 | EBWK - Global | 2006-07-29 | 0 | 0 | 02 | EK | MC2 | 02A | MC | MC210 | M |  | M | E |  |  |  |  |  |  | X | 06 |  |  |  |
| PK02AMC15 |  | 02A MC210 160-C - Civil Prod. V. Data | 35d | 2005-11-09 A | 2006-06-05 A | PK000MC21J | 100% | 2005-11-09 | 2005-12-27 | EBWK - Global | 2006-07-29 | 0 | 0 | 02 | EK | MC2 | 02A | MC | MC210 | M |  | M | E |  |  |  |  |  |  | X | 06 |  |  |  |
| PK02AMC16 |  | 02A MC210 160-C - E&I Prod. V. Data | 35d | 2005-11-09 A | 2006-06-05 A | PK000MC21J | 100% | 2005-11-09 | 2005-12-27 | EBWK - Global | 2006-07-29 | 0 | 0 | 02 | EK | MC2 | 02A | MC | MC210 | M |  | M | E |  |  |  |  |  |  | X | 06 |  |  |  |
| PK02LMC21 |  | 02E MC230 114-C, 172-C & 183-C - Piping Prod. V. Data | 35d | 2005-11-09 A | 2006-06-09 A | PK000MC23J | 100% | 2005-11-09 | 2005-12-27 | EBWK - Global | 2006-07-29 | 0 | 0 | 02 | EK | MC2 | 02E | MC | MC230 | M |  | M | E |  |  |  |  |  |  | X | 06 |  |  |  |
| PK02LMC22 |  | 02E MC230 114-C, 172-C & 183-C - Civil Prod. V. Data | 35d | 2005-11-09 A | 2006-06-05 A | PK000MC23J | 100% | 2005-11-09 | 2005-12-27 | EBWK - Global | 2006-07-29 | 0 | 0 | 02 | EK | MC2 | 02E | MC | MC230 | M |  | M | E |  |  |  |  |  |  | X | 06 |  |  |  |
| PK02LMC23 |  | 02E MC230 114-C, 172-C & 183-C - E&I Prod. V. Data | 35d | 2005-11-09 A | 2006-06-05 A | PK000MC23J | 100% | 2005-11-09 | 2005-12-27 | EBWK - Global | 2006-07-29 | 0 | 0 | 02 | EK | MC2 | 02E | MC | MC230 | M |  | M | E |  |  |  |  |  |  | X | 06 |  |  |  |
| ZZ1420 |  | 02C MC210 128-C, 134-C, 167-C - Piping Prod. V. Data | 35d | 2005-11-09 A | 2006-05-01 A | PK000MC21J | 100% | 2005-11-09 | 2005-12-27 | EBWK - Global | 2006-07-29 | 0 | 0 | 02 | EK | MC2 | 02C | MC | MC210 | M |  | M | E |  |  |  |  |  |  | X | 06 |  |  |  |
| ZZ1430 |  | 02C MC210 128-C, 134-C, 167-C - Civil Prod. V. Data | 35d | 2005-11-09 A | 2006-06-12 A | PK000MC21J | 100% | 2005-11-09 | 2005-12-27 | EBWK - Global | 2006-07-29 | 0 | 0 | 02 | EK | MC2 | 02C | MC | MC210 | M |  | M | E |  |  |  |  |  |  | X | 06 |  |  |  |
| ZZ1440 |  | 02C MC210 128-C, 134-C, 167-C - E&I Prod. V. Data | 35d | 2005-11-09 A | 2006-06-12 A | PK000MC21J | 100% | 2005-11-09 | 2005-12-27 | EBWK - Global | 2006-07-29 | 0 | 0 | 02 | EK | MC2 | 02C | MC | MC210 | M |  | M | E |  |  |  |  |  |  | X | 06 |  |  |  |
| ZZ1480 |  | 02D MC210 127-C - Piping Prod. V. Data | 35d | 2005-11-09 A | 2006-05-01 A | PK000MC21J | 100% | 2005-11-09 | 2005-12-27 | EBWK - Global | 2006-07-29 | 0 | 0 | 02 | EK | MC2 | 02D | MC | MC210 | M |  | M | E |  |  |  |  |  |  | X | 06 |  |  |  |
| ZZ1490 |  | 02D MC210 127-C - Civil Prod. V. Data | 35d | 2005-11-09 A | 2006-06-13 A | PK000MC21J | 100% | 2005-11-09 | 2005-12-27 | EBWK - Global | 2006-07-29 | 0 | 0 | 02 | EK | MC2 | 02D | MC | MC210 | M |  | M | E |  |  |  |  |  |  | X | 06 |  |  |  |
| ZZ1500 |  | 02D MC210 127-C - E&I Prod. V. Data | 35d | 2005-11-09 A | 2006-06-13 A | PK000MC21J | 100% | 2005-11-09 | 2005-12-27 | EBWK - Global | 2006-07-29 | 0 | 0 | 02 | EK | MC2 | 02D | MC | MC210 | M |  | M | E |  |  |  |  |  |  | X | 06 |  |  |  |
| ZZ1510 |  | 02E MC210 115-C, 130-C - Piping Prod. V. Data | 35d | 2005-11-09 A | 2006-05-26 A | PK000MC21J | 100% | 2005-11-09 | 2005-12-27 | EBWK - Global | 2006-07-29 | 0 | 0 | 02 | EK | MC2 | 02E | MC | MC210 | M |  | M | E |  |  |  |  |  |  | X | 06 |  |  |  |
| ZZ1520 |  | 02E MC210 115-C, 130-C - Civil Prod. V. Data | 35d | 2005-11-09 A | 2006-06-09 A | PK000MC21J | 100% | 2005-11-09 | 2005-12-27 | EBWK - Global | 2006-07-29 | 0 | 0 | 02 | EK | MC2 | 02E | MC | MC210 | M |  | M | E |  |  |  |  |  |  | X | 06 |  |  |  |
| ZZ1530 |  | 02E MC210 115-C, 130-C - E&I Prod. V. Data | 35d | 2005-11-09 A | 2006-06-13 A | PK000MC21J | 100% | 2005-11-09 | 2005-12-27 | EBWK - Global | 2006-07-29 | 0 | 0 | 02 | EK | MC2 | 02E | MC | MC210 | M |  | M | E |  |  |  |  |  |  | X | 06 |  |  |  |
| ZZ1540 |  | 02G MC210 133-C - Piping Prod. V. Data | 35d | 2005-11-09 A | 2006-06-23 A | PK000MC21J | 100% | 2005-11-09 | 2005-12-27 | EBWK - Global | 2006-07-29 | 0 | 0 | 02 | EK | MC2 | 02G | MC | MC210 | M |  | M | E |  |  |  |  |  |  | X | 06 |  |  |  |
| ZZ1550 |  | 02G MC210 133-C - Civil Prod. V. Data | 35d | 2005-11-09 A | 2006-06-23 A | PK000MC21J | 100% | 2005-11-09 | 2005-12-27 | EBWK - Global | 2006-07-29 | 0 | 0 | 02 | EK | MC2 | 02G | MC | MC210 | M |  | M | E |  |  |  |  |  |  | X | 06 |  |  |  |
| ZZ1560 |  | 02G MC210 133-C - E&I Prod. V. Data | 35d | 2005-11-09 A | 2006-06-23 A | PK000MC21J | 100% | 2005-11-09 | 2005-12-27 | EBWK - Global | 2006-07-29 | 0 | 0 | 02 | EK | MC2 | 02G | MC | MC210 | M |  | M | E |  |  |  |  |  |  | X | 06 |  |  |  |
| ZZ1580 |  | 02J MC210 173-C - Civil Prod. V. Data | 35d | 2005-11-09 A | 2006-04-03 A | PK000MC21J | 100% | 2005-11-09 | 2005-12-27 | EBWK - Global | 2006-07-29 | 0 | 0 | 02 | EK | MC2 | 02J | MC | MC210 | M |  | M | E |  |  |  |  |  |  | X | 06 |  |  |  |
| ZZ1590 |  | 02J MC210 173-C - Piping Prod. V. Data | 35d | 2005-11-09 A | 2006-06-05 A | PK000MC21J | 100% | 2005-11-09 | 2005-12-27 | EBWK - Global | 2006-07-29 | 0 | 0 | 02 | EK | MC2 | 02J | MC | MC210 | M |  | M | E |  |  |  |  |  |  | X | 06 |  |  |  |
| ZZ1600 |  | 02J MC210 173-C - E&I Prod. V. Data | 35d | 2005-11-09 A | 2006-06-05 A | PK000MC21J | 100% | 2005-11-09 | 2005-12-27 | EBWK - Global | 2006-07-29 | 0 | 0 | 02 | EK | MC2 | 02J | MC | MC210 | M |  | M | E |  |  |  |  |  |  | X | 06 |  |  |  |
| ZZ1610 |  | 02K MC210 174-C - Piping Prod. V. Data | 35d | 2005-11-09 A | 2006-06-05 A | PK000MC21J | 100% | 2005-11-09 | 2005-12-27 | EBWK - Global | 2006-07-29 | 0 | 0 | 02 | EK | MC2 | 02K | MC | MC210 | M |  | M | E |  |  |  |  |  |  | X | 06 |  |  |  |
| ZZ1620 |  | 02K MC210 174-C - Civil Prod. V. Data | 35d | 2005-11-09 A | 2006-06-05 A | PK000MC21J | 100% | 2005-11-09 | 2005-12-27 | EBWK - Global | 2006-07-29 | 0 | 0 | 02 | EK | MC2 | 02K | MC | MC210 | M |  | M | E |  |  |  |  |  |  | X | 06 |  |  |  |
| ZZ1630 |  | 02K MC210 174-C - E&I Prod. V. Data | 35d | 2005-11-09 A | 2006-06-05 A | PK000MC21J | 100% | 2005-11-09 | 2005-12-27 | EBWK - Global | 2006-07-29 | 0 | 0 | 02 | EK | MC2 | 02K | MC | MC210 | M |  | M | E |  |  |  |  |  |  | X | 06 |  |  |  |
| ZZ1670 |  | 02L MC210 110-C - Piping Prod. V. Data | 35d | 2005-11-09 A | 2006-06-05 A | PK000MC21J | 100% | 2005-11-09 | 2005-12-27 | EBWK - Global | 2006-07-29 | 0 | 0 | 02 | EK | MC2 | 02L | MC | MC210 | M |  | M | E |  |  |  |  |  |  | X | 06 |  |  |  |
| ZZ1680 |  | 02L MC210 110-C - Civil Prod. V. Data | 35d | 2005-11-09 A | 2006-06-05 A | PK000MC21J | 100% | 2005-11-09 | 2005-12-27 | EBWK - Global | 2006-07-29 | 0 | 0 | 02 | EK | MC2 | 02L | MC | MC210 | M |  | M | E |  |  |  |  |  |  | X | 06 |  |  |  |
| ZZ1690 |  | 02L MC210 110-C - E&I Prod. V. Data | 35d | 2005-11-09 A | 2006-06-05 A | PK000MC21J | 100% | 2005-11-09 | 2005-12-27 | EBWK - Global | 2006-07-29 | 0 | 0 | 02 | EK | MC2 | 02L | MC | MC210 | M |  | M | E |  |  |  |  |  |  | X | 06 |  |  |  |
| ZZ1700 |  | 02M MC210 124-C - Piping Prod. V. Data | 35d | 2005-11-09 A | 2006-05-26 A | PK000MC21J | 100% | 2005-11-09 | 2005-12-27 | EBWK - Global | 2006-07-29 | 0 | 0 | 02 | EK | MC2 | 02M | MC | MC210 | M |  | M | E |  |  |  |  |  |  | X | 06 |  |  |  |
| ZZ1710 |  | 02M MC210 124-C - Civil Prod. V. Data | 35d | 2005-11-09 A | 2006-06-16 A | PK000MC21J | 100% | 2005-11-09 | 2005-12-27 | EBWK - Global | 2006-07-29 | 0 | 0 | 02 | EK | MC2 | 02M | MC | MC210 | M |  | M | E |  |  |  |  |  |  | X | 06 |  |  |  |
| ZZ1720 |  | 02M MC210 124-C - E&I Prod. V. Data | 35d | 2005-11-09 A | 2006-06-16 A | PK000MC21J | 100% | 2005-11-09 | 2005-12-27 | EBWK - Global | 2006-07-29 | 0 | 0 | 02 | EK | MC2 | 02M | MC | MC210 | M |  | M | E |  |  |  |  |  |  | X | 06 |  |  |  |
| ZZ1760 |  | 02L MC230 105-C, 106-C, 107-C, 109-C & 111-C - Piping Prod. V. Data | 35d | 2005-11-09 A | 2006-05-29 A | PK000MC23J | 100% | 2005-11-09 | 2005-12-27 | EBWK - Global | 2006-07-29 | 0 | 0 | 02 | EK | MC2 | 02L | MC | MC230 | M |  | M | E |  |  |  |  |  |  | X | 06 |  |  |  |
| ZZ1770 |  | 02L MC230 105-C, 106-C, 107-C, 109-C & 111-C - Civil Prod. V. Data | 35d | 2005-11-09 A | 2006-06-05 A | PK000MC23J | 100% | 2005-11-09 | 2005-12-27 | EBWK - Global | 2006-07-29 | 0 | 0 | 02 | EK | MC2 | 02L | MC | MC230 | M |  | M | E |  |  |  |  |  |  | X | 06 |  |  |  |
| ZZ1780 |  | 02L MC230 105-C, 106-C, 107-C, 109-C & 111-C - E&I Prod. V. Data | 35d | 2005-11-09 A | 2006-06-05 A | PK000MC23J | 100% | 2005-11-09 | 2005-12-27 | EBWK - Global | 2006-07-29 | 0 | 0 | 02 | EK | MC2 | 02L | MC | MC230 | M |  | M | E |  |  |  |  |  |  | X | 06 |  |  |  |
| ZZ1850 |  | 02J MC311 103-C1/C2 - Piping Prod. V. Data | 35d | 2005-12-02 A | 2006-06-05 A | PK000MC32J | 100% | 2005-12-02 | 2006-01-19 | EBWK - Global | 2006-07-29 | 0 | 0 | 02 | EK | MC3 | 02J | MC | MC311 | M |  | M | E |  |  |  |  |  |  | X | 06 | 20 | 30 | 40 |
| ZZ1860 |  | 02J MC311 103-C1/C2 - Civil Prod. V. Data | 35d | 2005-12-02 A | 2006-04-03 A | PK000MC32J | 100% | 2005-12-02 | 2006-01-19 | EBWK - Global | 2006-07-29 | 0 | 0 | 02 | EK | MC3 | 02J | MC | MC311 | M |  | M | E |  |  |  |  |  |  | X | 06 | 20 | 30 | 40 |
| ZZ1870 |  | 02J MC311 103-C1/C2 - E&I Prod. V. Data | 35d | 2005-12-02 A | 2006-06-05 A | PK000MC32J | 100% | 2005-12-02 | 2006-01-19 | EBWK - Global | 2006-07-29 | 0 | 0 | 02 | EK | MC3 | 02J | MC | MC311 | M |  | M | E |  |  |  |  |  |  | X | 06 | 20 | 30 | 40 |
| ZZ1910 |  | 02M MC311 123-C1/C2A/C2B - Piping Prod. V. Data | 35d | 2005-12-02 A | 2006-05-09 A | PK000MC32J | 100% | 2005-12-02 | 2006-01-19 | EBWK - Global | 2006-07-29 | 0 | 0 | 02 | EK | MC3 | 02M | MC | MC311 | M |  | M | E |  |  |  |  |  |  | X | 06 | 20 | 30 | 40 |
| ZZ1920 |  | 02M MC311 123-C1/C2A/C2B - Civil Prod. V. Data | 35d | 2005-12-02 A | 2006-04-03 A | PK000MC32J | 100% | 2005-12-02 | 2006-01-19 | EBWK - Global | 2006-07-29 | 0 | 0 | 02 | EK | MC3 | 02M | MC | MC311 | M |  | M | E |  |  |  |  |  |  | X | 06 | 20 | 30 | 40 |
| ZZ1930 |  | 02M MC311 123-C1/C2A/C2B - E&I Prod. V. Data | 35d | 2005-12-02 A | 2006-06-05 A | PK000MC32J | 100% | 2005-12-02 | 2006-01-19 | EBWK - Global | 2006-07-29 | 0 | 0 | 02 | EK | MC3 | 02M | MC | MC311 | M |  | M | E |  |  |  |  |  |  | X | 06 | 20 | 30 | 40 |
| PK02AMC116 |  | 02A Exchangers - Recv/Accepted Planning Data | 1d | 2005-12-26 A | 2005-12-26 A | EK000MC21P, PK000MC61N | 100% | 2006-01-03 | 2006-01-03 |  | 2006-07-29 | 0 | 0 | 02 | EK | MC2 | 02A | MC | P1000 | M |  | J | E | 36 | 25 | E1B1 | 116 | 02A | MC116 |  |  |  |  |  |
| PK02AMC17 |  | 02A MC610 161-C - Piping Prod. V. Data | 35d | 2006-01-03 A | 2006-01-30 A | PK000MC61J FF+10d | 100% | 2006-01-03 | 2006-02-20 | EBWK - Global | 2006-07-29 | 0 | 0 | 02 | EK | MC6 | 02A | MC | MC610 | M |  | M | E |  |  |  |  |  |  | X |  |  |  |  |
| PK02AMC18 |  | 02A MC610 161-C - Civil Prod. V. Data | 35d | 2006-01-03 A | 2006-01-30 A | PK000MC61J FF+10d | 100% | 2006-01-03 | 2006-02-20 | EBWK - Global | 2006-07-29 | 0 | 0 | 02 | EK | MC6 | 02A | MC | MC610 | M |  | M | E |  |  |  |  |  |  | X |  |  |  |  |
| PK02AMC19 |  | 02A MC610 161-C - E&I Prod. V. Data | 35d | 2006-01-03 A | 2006-01-30 A | PK000MC61J FF+10d | 100% | 2006-01-03 | 2006-02-20 | EBWK - Global | 2006-07-29 | 0 | 0 | 02 | EK | MC6 | 02A | MC | MC610 | M |  | M | E |  |  |  |  |  |  | X |  |  |  |  |
| PK02KMC116 |  | 02K Exchangers - Recv/Accepted Planning Data | 1d | 2006-01-03 A | 2006-01-03 A | EK000MC21P, PK000MC61N | 100% |  |  |  | 2006-07-29 | 0 | 0 | 02 | EK | MC2 | 02K | MC | P1000 | M |  | J | E | 19 | 17 | E1B1 | 116 | 02K | MC116 |  |  |  |  |  |
| ZZ2030 |  | 02K MC610 188-CA,CB,CC - Piping Prod. V. Data | 35d | 2006-01-03 A | 2006-01-30 A | PK000MC61J | 100% | 2006-01-03 | 2006-02-20 | EBWK - Global | 2006-07-29 | 0 | 0 | 02 | EK | MC6 | 02K | MC | MC610 | M |  | M | E |  |  |  |  |  |  | X |  |  |  |  |
| ZZ2040 |  | 02K MC610 188-CA,CB,CC - Civil Prod. V. Data | 35d | 2006-01-03 A | 2006-01-30 A | PK000MC61J | 100% | 2006-01-03 | 2006-02-20 | EBWK - Global | 2006-07-29 | 0 | 0 | 02 | EK | MC6 | 02K | MC | MC610 | M |  | M | E |  |  |  |  |  |  | X |  |  |  |  |
| ZZ2050 |  | 02K MC610 188-CA,CB,CC - E&I Prod. V. Data | 35d | 2006-01-03 A | 2006-01-30 A | PK000MC61J | 100% | 2006-01-03 | 2006-02-20 | EBWK - Global | 2006-07-29 | 0 | 0 | 02 | EK | MC6 | 02K | MC | MC610 | M |  | M | E |  |  |  |  |  |  | X |  |  |  |  |
| ZZ1790 |  | 02H MC310 101,102-C - Piping Prod. V. Data | 35d | 2006-02-03 A | 2006-06-05 A | PK000MC31J | 100% | 2006-02-03 | 2006-03-23 | EBWK - Global | 2006-07-29 | 0 | 0 | 02 | EK | MC3 | 02H | MC | MC310 | M |  | M | E |  |  |  |  |  |  | X | 06 | 60 | 80 | 100 |
| ZZ1800 |  | 02H MC310 101,102-C - Civil Prod. V. Data | 35d | 2006-02-03 A | 2006-05-25 A | PK000MC31J | 100% | 2006-02-03 | 2006-03-23 | EBWK - Global | 2006-07-29 | 0 | 0 | 02 | EK | MC3 | 02H | MC | MC310 | M |  | M | E |  |  |  |  |  |  | X | 06 | 60 | 80 | 100 |
| ZZ1810 |  | 02H MC310 101,102-C - E&I Prod. V. Data | 35d | 2006-02-03 A | 2006-06-05 A | PK000MC31J | 100% | 2006-02-03 | 2006-03-23 | EBWK - Global | 2006-07-29 | 0 | 0 | 02 | EK | MC3 | 02H | MC | MC310 | M |  | M | E |  |  |  |  |  |  | X | 06 | 60 | 80 | 100 |

| ID | WBS | Activity | Duration | Start | Finish | Predecessors | Complete | Planned start | Planned finish | Calendar | zData Date | PCA Criticality Index | PCA Duration Sensitivity | EB02 - UNIT | EB01 - RESP | EB06 - WORK OP | EB03 - AREA | EB05 - DISCIPLINE | EB07 - REQN | EB08 - TAG | EB04 - CLASS | EB09 - IPMS | EB00 - EPC | EB21 - Rev 2 Risk Associations | Optimistic Duration | Most Likely Duration | Pessimistic Duration | user_integer1 | EB11 - FLAG | EB15 - Civil / U/G Path of Construction | EB16 - Piping Path of Construction | EB17 - Suffix |
| --- | --- | --- | --- | --- | --- | --- | --- | --- | --- | --- | --- | --- | --- | --- | --- | --- | --- | --- | --- | --- | --- | --- | --- | --- | --- | --- | --- | --- | --- | --- | --- | --- |
|  | MD | **Vessels Engineering** |  | 2005-09-26 | 2006-06-16 |  |  |  |  |  |  |  |  |  |  |  |  |  |  |  |  |  |  |  |  |  |  |  |  |  |  |  |
| PK02HMD22 |  | 02H MD501 107-D Primary Reformer Effluent Transfer Line - Prod. V. Data | 35d | 2005-09-26 A | 2006-03-27 A | PK000MD51J | 100% | 2006-01-30 | 2006-03-17 | EBWK - Global | 2006-07-29 | 0 | 0 | 02 | EK | MD5 | 02H | MD | MD501 | X | M | M | E | 06 |  |  |  |  |  |  |  |  |
| PK02HMD21 |  | 02H MD301 103-D Secondary Reformer - Prod. V. Data | 35d | 2005-10-10 A | 2006-06-05 A | PK000MD31J, PK000MD31N | 100% | 2006-01-30 | 2006-03-17 | EBWK - Global | 2006-07-29 | 0 | 0 | 02 | EK | MD3 | 02H | MD | MD301 | X | M | M | E | 06 |  |  |  |  |  |  |  |  |
| PK02LMD01 |  | 02L MD201 101-E CO2 Absorber - Prod. V. Data | 35d | 2005-10-17 A | 2006-05-02 A | PK000MD21J | 100% | 2005-10-17 | 2005-12-02 | EBWK - Global | 2006-07-29 | 0 | 0 | 02 | EK | MD2 | 02L | MD | MD201 | X | M | M | E | 06 |  |  |  |  |  |  |  |  |
| PK02LMD02 |  | 02L MD201 102-E CO2 Stripper - Prod. V. Data | 35d | 2005-10-17 A | 2006-05-02 A | PK000MD21J | 100% | 2005-10-17 | 2005-12-02 | EBWK - Global | 2006-07-29 | 0 | 0 | 02 | EK | MD2 | 02L | MD | MD201 | X | M | M | E | 06 |  |  |  |  |  |  |  |  |
| PK02EMD02 |  | 02E MD304 106-D Methanator - Prod. V. Data | 35d | 2005-10-19 A | 2006-06-05 A | PK000MD34J | 100% | 2006-01-30 | 2006-03-17 | EBWK - Global | 2006-07-29 | 0 | 0.4 | 02 | EK | MD3 | 02E | MD | MD304 | X | M | M | E | 06 | 18 | 20 | 30 | 6 | CD |  |  |  |
| PK02MMD02 |  | 02M MD303 105-D Ammonia Synthesis Converter - Prod. V. Data | 35d | 2005-10-26 A | 2006-05-02 A | PK000MD33J | 100% | 2006-01-30 | 2006-03-17 | EBWK - Global | 2006-07-29 | 0 | 0 | 02 | EK | MD3 | 02M | MD | MD303 | 105D | M | M | E | 06 |  |  |  |  |  |  |  |  |
| PK02MMD04 |  | 02M MD303 122-C1 Ammonia Conv. Bed 1 Interchanger - Prod. V. Data | 35d | 2005-10-26 A | 2006-05-02 A | PK000MD33J | 100% | 2005-10-26 | 2005-12-13 | EBWK - Global | 2006-07-29 | 0 | 0 | 02 | EK | MD3 | 02M | MD | MD303 | X | M | M | E | 06 |  |  |  |  |  |  |  |  |
| PK02MMD05 |  | 02M MD303 122-C2 Ammonia Conv. Bed 2 Interchanger - Prod. V. Data | 35d | 2005-10-26 A | 2006-05-02 A | PK000MD33J | 100% | 2005-10-26 | 2005-12-13 | EBWK - Global | 2006-07-29 | 0 | 0 | 02 | EK | MD3 | 02M | MD | MD303 | X | M | M | E | 06 |  |  |  |  |  |  |  |  |
| PK02MMD06 |  | 02M MD303 122-C3 Ammonia Conv. Bed 3 Interchanger - Prod. V. Data | 35d | 2005-10-26 A | 2006-05-02 A | PK000MD33J | 100% | 2005-10-26 | 2005-12-13 | EBWK - Global | 2006-07-29 | 0 | 0 | 02 | EK | MD3 | 02M | MD | MD303 | X | M | M | E | 06 |  |  |  |  |  |  |  |  |
| PK02QMD07 |  | 02Q MD401 101-F Steam Drum - Prod. V. Data | 35d | 2005-10-31 A | 2006-05-03 A | PK000MD41J | 100% | 2006-01-30 | 2006-03-17 | EBWK - Global | 2006-07-29 | 0 | 0 | 02 | EK | MD4 | 02Q | MD | MD401 | X | M | M | E | 06 |  |  |  |  |  |  |  |  |
| PK02JMD03 |  | 02J MD302 104-D1 High Temperature Shift Converter - Prod. V. Data | 35d | 2005-11-02 A | 2006-05-08 A | PK000MD32J, PK000MD32N | 100% | 2005-11-02 | 2005-12-20 | EBWK - Global | 2006-07-29 | 0 | 0 | 02 | EK | MD3 | 02J | MD | MD302 | X | M | M | E | 06 |  |  |  |  |  |  |  |  |
| PK02JMD04 |  | 02J MD302 104-D2 Low Temperature Shift Converter - Prod. V. Data | 35d | 2005-11-02 A | 2006-05-08 A | PK000MD32J, PK000MD32N | 100% | 2005-11-02 | 2005-12-20 | EBWK - Global | 2006-07-29 | 0 | 0 | 02 | EK | MD3 | 02J | MD | MD302 | X | M | M | E | 06 |  |  |  |  |  |  |  |  |
| PK02JMD05 |  | 02J MD304 108-DA Desulfurizer - Prod. V. Data | 35d | 2005-11-30 A | 2006-05-02 A | PK000MD34J | 100% | 2006-03-27 | 2006-05-12 | EBWK - Global | 2006-07-29 | 0 | 0 | 02 | EK | MD3 | 02J | MD | MD304 | X | M | M | E |  |  |  |  |  |  |  |  |  |
| PK02JMD06 |  | 02J MD304 108-DB Desulfurizer - Prod. V. Data | 35d | 2005-11-30 A | 2006-05-02 A | PK000MD34J | 100% | 2006-03-27 | 2006-05-12 | EBWK - Global | 2006-07-29 | 0 | 0 | 02 | EK | MD3 | 02J | MD | MD304 | X | M | M | E |  |  |  |  |  |  |  |  |  |
| PK02HMD222 |  | 02H Recv./Accept Planning Data - Vessels (103,107-D,156-F) | 1d | 2005-12-05 A | 2005-12-05 A | PK000MD31N, PM000MD45N, PK000MD51N | 100% | 2006-01-03 | 2006-01-03 |  | 2006-07-29 | 0 | 0 | 02 | EK | MD2 | 02H | MD | P1080 |  | M | J | E |  |  |  |  |  |  | 11 | 20 | E1B1 |
| PK02AMD01 |  | 02A MD202 103-E LP Ammonia Scrubber - Prod. V. Data | 35d | 2005-12-13 A | 2006-01-30 A | PK000MD22J | 100% | 2005-09-16 | 2005-11-03 | EBWK - Global | 2006-07-29 | 0 | 0 | 02 | EK | MD2 | 02A | MD | MD202 | X | M | M | E |  |  |  |  |  |  |  |  |  |
| PK02AMD02 |  | 02A MD202 104-E HP Ammonia Scrubber - Prod. V. Data | 35d | 2005-12-13 A | 2006-01-30 A | PK000MD22J | 100% | 2005-09-16 | 2005-11-03 | EBWK - Global | 2006-07-29 | 0 | 0 | 02 | EK | MD2 | 02A | MD | MD202 | X | M | M | E |  |  |  |  |  |  |  |  |  |
| PK02AMD03 |  | 02A MD202 105-E Ammonia Distillation Column - Prod. V. Data | 35d | 2005-12-13 A | 2006-01-30 A | PK000MD22J | 100% | 2005-09-16 | 2005-11-03 | EBWK - Global | 2006-07-29 | 0 | 0 | 02 | EK | MD2 | 02A | MD | MD202 | X | M | M | E |  |  |  |  |  |  |  |  |  |
| PK02AMD04 |  | 02A MD202 103/4/5-E LP Ammonia Scrubber - Piping Prod. V. Data | 35d | 2005-12-13 A | 2006-01-30 A | PK000MD22J | 100% | 2005-09-16 | 2005-11-03 | EBWK - Global | 2006-07-29 | 0 | 0 | 02 | EK | MD2 | 02A | MD | MD202 | X | M | M | E |  |  |  |  |  |  |  |  |  |
| PK02AMD05 |  | 02A MD202 103/4/5-E LP Ammonia Scrubber - Civil Prod. V. Data | 35d | 2005-12-13 A | 2006-01-30 A | PK000MD22J | 100% | 2005-09-16 | 2005-11-03 | EBWK - Global | 2006-07-29 | 0 | 0 | 02 | EK | MD2 | 02A | MD | MD202 | X | M | M | E |  |  |  |  |  |  |  |  |  |
| PK02AMD06 |  | 02A MD202 103/4/5-E LP Ammonia Scrubber - E&I Prod. V. Data | 35d | 2005-12-13 A | 2006-01-30 A | PK000MD22J | 100% | 2005-09-16 | 2005-11-03 | EBWK - Global | 2006-07-29 | 0 | 0 | 02 | EK | MD2 | 02A | MD | MD202 | X | M | M | E |  |  |  |  |  |  |  |  |  |
| PK02KMD11 |  | 02K MD202 150-E Process Condensate Stripper - Prod. V. Data | 35d | 2005-12-13 A | 2006-06-05 A | PK000MD22J, PM000MD22N | 100% | 2005-09-16 | 2005-11-03 | EBWK - Global | 2006-07-29 | 0 | 0 | 02 | EK | MD2 | 02K | MD | MD202 | X | M | M | E | 06 |  |  |  |  |  |  |  |  |
| PK02DMD01 |  | 02D MD403 106-F Ammonia Separator - Prod. V. Data | 35d | 2006-01-30 A | 2006-06-05 A | PK000MD43J | 100% | 2006-01-30 | 2006-03-17 | EBWK - Global | 2006-07-29 | 0 | 4 | 02 | EK | MD4 | 02D | MD | MD403 | X | M | M | E | 06 | 18 | 20 | 30 | 5 | CD |  |  |  |
| PK02DMD02 |  | 02D MD404 107-F Ammonia Letdown Drum - Prod. V. Data | 35d | 2006-01-30 A | 2006-01-30 A | PK000MD44J | 100% | 2006-01-30 | 2006-03-17 | EBWK - Global | 2006-07-29 | 0 | 0 | 02 | EK | MD4 | 02D | MD | MD404 | X | M | M | E |  |  |  |  |  |  |  |  |  |
| PK02DMD03 |  | 02D MD404 109-F Refrigerant Receiver - Prod. V. Data | 35d | 2006-01-30 A | 2006-01-30 A | PK000MD44J | 100% | 2006-01-30 | 2006-03-17 | EBWK - Global | 2006-07-29 | 0 | 0 | 02 | EK | MD4 | 02D | MD | MD404 | X | M | M | E |  |  |  |  |  |  |  |  |  |
| PK02EMD01 |  | 02E MD402 104-F Syn Gas Comp. Suction Drum - Prod. V. Data | 35d | 2006-01-30 A | 2006-01-30 A | PK000MD42J | 100% | 2006-01-30 | 2006-03-17 | EBWK - Global | 2006-07-29 | 0 | 0 | 02 | EK | MD4 | 02E | MD | MD402 | X | M | M | E |  |  |  |  |  |  |  |  |  |
| PK02EMD08 |  | 02E MD405 157-F Mol Sieve Regen HP Condensate Drum - Prod. V. Data | 35d | 2006-01-30 A | 2006-01-30 A | PK000MD45J | 100% | 2006-01-30 | 2006-03-17 | EBWK - Global | 2006-07-29 | 0 | 0 | 02 | EK | MD4 | 02E | MD | MD405 | X | M | M | E |  |  |  |  |  |  |  |  |  |
| PK02HMD23 |  | 02H MD405 156-F Steam Blowdown Drum - Prod. V. Data | 35d | 2006-01-30 A | 2006-01-30 A | PK000MD45J | 100% | 2006-01-30 | 2006-03-17 | EBWK - Global | 2006-07-29 | 0 | 0 | 02 | EK | MD4 | 02H | MD | MD405 | X | M | M | E |  |  |  |  |  |  |  |  |  |
| PK02KMD06 |  | 02K MD405 115-F Benfield Solution Sump - Prod. V. Data | 35d | 2006-01-30 A | 2006-01-30 A | PK000MD45J | 100% | 2006-01-30 | 2006-03-17 | EBWK - Global | 2006-07-29 | 0 | 0 | 02 | EK | MD4 | 02K | MD | MD405 | X | M | M | E |  |  |  |  |  |  |  |  |  |
| PK02KMD10 |  | 02K MD405 118-F Benfield Carbon Filter - Prod. V. Data | 35d | 2006-01-30 A | 2006-01-30 A | PK000MD45J | 100% | 2006-01-30 | 2006-03-17 | EBWK - Global | 2006-07-29 | 0 | 0 | 02 | EK | MD4 | 02K | MD | MD405 | X | M | M | E |  |  |  |  |  |  |  |  |  |
| PK02LMD03 |  | 02L MD402 102-F1 Raw Gas Separator - Prod. V. Data | 35d | 2006-01-30 A | 2006-01-30 A | PK000MD42J | 100% | 2006-01-30 | 2006-03-17 | EBWK - Global | 2006-07-29 | 0 | 0 | 02 | EK | MD4 | 02L | MD | MD402 | X | M | M | E |  |  |  |  |  |  |  |  |  |
| PK02LMD04 |  | 02L MD402 102-F2 CO2 Absorber O/H KO Drum - Prod. V. Data | 35d | 2006-01-30 A | 2006-01-30 A | PK000MD42J | 100% | 2006-01-30 | 2006-03-17 | EBWK - Global | 2006-07-29 | 0 | 0 | 02 | EK | MD4 | 02L | MD | MD402 | X | M | M | E |  |  |  |  |  |  |  |  |  |
| PK02LMD05 |  | 02L MD406 103-F CO2 Stripper Cond. KO Drum - Prod. V. Data | 35d | 2006-01-30 A | 2006-01-30 A | PK000MD47J | 100% | 2006-01-30 | 2006-03-17 | EBWK - Global | 2006-07-29 | 0 | 0 | 02 | EK | MD4 | 02L | MD | MD406 | X | M | M | E |  |  |  |  |  |  |  |  |  |
| PK02LMD29 |  | 02L MD404 132-F Lean Solution Flash Tank - Prod. V. Data | 35d | 2006-01-30 A | 2006-01-30 A | PK000MD44J | 100% | 2006-01-30 | 2006-03-17 | EBWK - Global | 2006-07-29 | 0 | 0 | 02 | EK | MD4 | 02L | MD | MD404 | X | M | M | E |  |  |  |  |  |  |  |  |  |
| PK02MMD11 |  | 02M MD402 144-F Feed Gas Knockout Drum - Prod. V. Data | 35d | 2006-01-30 A | 2006-01-30 A | PK000MD42J | 100% | 2006-01-30 | 2006-03-17 | EBWK - Global | 2006-07-29 | 0 | 0 | 02 | EK | MD4 | 02M | MD | MD402 | X | M | M | E |  |  |  |  |  |  |  |  |  |
| PK02MMD12 |  | 02M MD305 102-D Mercury Guard - Prod. V. Data | 35d | 2006-03-06 A | 2006-06-05 A | PK000MD108 | 100% | 2006-02-27 | 2006-04-14 | EBWK - Global | 2006-07-29 | 0 | 0 | 02 | EK | MD3 | 02M | MD | MD305 | X | M | M | E | 06 | 35 | 40 | 50 | 35 | CD |  |  |  |
| PK02KMF04 |  | 02K MF301 114-F Benfield Solution Storage Tank - Fdn. V. Data (Subcontract) | 35d | 2006-03-13 A | 2006-06-16 A | EK000MF31B | 100% | 2006-03-13 | 2006-04-28 | EBWK - Global | 2006-07-29 | 0 | 0 | 02 | EK | MF3 | 02K | MD | MF301 | X | M | M | E |  |  |  |  |  |  |  |  |  |
| PK02KMF05 |  | 02K MF301 114-F Benfield Solution Storage Tank - Prod. V. Data (Subcontract) | 35d | 2006-03-13 A | 2006-06-16 A | EK000MF31B | 100% | 2006-03-13 | 2006-04-28 | EBWK - Global | 2006-07-29 | 0 | 0 | 02 | EK | MF3 | 02K | MD | MF301 | X | M | M | E |  |  |  |  |  |  |  |  |  |
| PK02EMD03 |  | 02E MD304 109-DA Molecular Sieve Dryer - Prod. V. Data | 35d | 2006-04-17 A | 2006-06-05 A | PK000MD34J | 100% | 2006-04-17 | 2006-06-02 | EBWK - Global | 2006-07-29 | 0 | 0 | 02 | EK | MD3 | 02E | MD | MD304 | X | M | M | E |  |  |  |  |  |  |  |  |  |
| PK02EMD04 |  | 02E MD304 109-DB Molecular Sieve Dryer - Prod. V. Data | 35d | 2006-04-17 A | 2006-06-05 A | PK000MD34J | 100% | 2006-04-17 | 2006-06-02 | EBWK - Global | 2006-07-29 | 0 | 0 | 02 | EK | MD3 | 02E | MD | MD304 | X | M | M | E |  |  |  |  |  |  |  |  |  |

| ID | WBS | Activity | Duration | Start | Finish | Predecessors | Complete | Remaining | Planned start | Planned finish | Total float | Free float | Expected finish | Calendar | zData Date | PCA Criticality Index | PCA Duration Sensitivity | EB02 - UNIT | EB01 - RESP | EB06 - WORK OP | EB03 - AREA | EB05 - DISCIPLINE | EB07 - REQN | EB10 - KEY | EB04 - CLASS | EB09 - IPMS | EB00 - EPC | EB15 - Civil / U/G Path of Construction | EB16 - Piping Path of Construction | EB17 - Suffix | Sequence | User Defined Field 1 | User Definer Field 2 | EB08 - TAG | EB21 - Rev 2 Risk Associations | user_text1 | Optimistic Duration | Most Likely Duration | Pessimistic Duration | user_integer1 | EB11 - FLAG |
| --- | --- | --- | --- | --- | --- | --- | --- | --- | --- | --- | --- | --- | --- | --- | --- | --- | --- | --- | --- | --- | --- | --- | --- | --- | --- | --- | --- | --- | --- | --- | --- | --- | --- | --- | --- | --- | --- | --- | --- | --- | --- |
|  | MJ | **Machinery Engineering** |  | 2005-09-09 | 2007-02-21 |  |  |  |  |  |  |  |  |  |  |  |  |  |  |  |  |  |  |  |  |  |  |  |  |  |  |  |  |  |  |  |  |  |  |  |  |
| PK02CMJ135 |  | 02C Recv. Planning V.Data - Compressors | 1d | 2005-09-09 A | 2005-09-09 A | PK000MJ21N | 100% |  | 2005-11-07 | 2005-11-07 |  |  |  |  | 2006-07-29 | 0 | 0 | 02 | EK | MJ2 | 02C | MJ | P2020 | P15 | M | J | E | 14 | 21 | E1B1 |  |  |  |  |  |  |  |  |  |  |  |
| PK02GMJ135 |  | 02G Recv. Planning V.Data - Compressors | 1d | 2005-09-09 A | 2005-09-09 A | PK000MJ22N, PK000MJ21N | 100% |  | 2005-11-14 | 2005-11-14 |  |  |  |  | 2006-07-29 | 0 | 0 | 02 | EK | MJ2 | 02G | MJ | P2020 | P15 | M | J | E | 9 | 22 | E1B1 | 135 | 02G | MJ135 |  |  |  |  |  |  |  |  |
| PK02BML100 |  | 02B Recv. Planning V. Data - Special Equip. 160-L | 1d | 2005-10-17 A | 2005-10-17 A | PK000ML31N | 100% |  |  |  |  |  |  |  | 2006-07-29 | 0 | 0 | 02 | EK | ML3 | 02B | MJ | P2030 | P15 | M | J | E | 34 | 34 | E1B1 | 100 | 02B | ML100 | 160L |  |  |  |  |  |  |  |
| PK02CMJ156 |  | 02C Recv. Planning V. Data - Surf. Cond. 103-JTC | 1d | 2005-10-17 A | 2005-10-17 A | PK000MJ75N | 100% |  |  |  |  |  |  |  | 2006-07-29 | 0 | 0 | 02 | EK | MJ7 | 02C | MJ | P2030 | P15 | M | J | E | 14 | 21 | E1B1 |  |  |  | 103JTC |  |  |  |  |  |  |  |
| PK02GMJ156 |  | 02G Recv. Planning V. Data - Surf. Cond. 101/4-JTC | 1d | 2005-10-17 A | 2005-10-17 A | PK000MJ75N | 100% |  |  |  |  |  |  |  | 2006-07-29 | 0 | 0 | 02 | EK | MJ7 | 02G | MJ | P2030 | P15 | M | J | E | 9 | 22 | E1B1 |  |  |  |  |  |  |  |  |  |  |  |
| PK02PMU100 |  | 02P Recv. Planning V. Data - Utility Equip. 101-U | 1d | 2005-10-17 A | 2005-10-17 A | PK000MU35N | 100% |  |  |  |  |  |  |  | 2006-07-29 | 0 | 0 | 02 | EK | MU3 | 02P | MJ | P2030 | P15 | M | J | E | 40 | 36 | E1B1 | 100 | 02N | MU100 | 101U |  |  |  |  |  |  |  |
| PK02KML100 |  | 02K Recv. Planning V. Data - Special Equip. 110-L,115-L | 1d | 2005-10-27 A | 2005-10-27 A | PK000ML42N | 100% |  | 2005-12-19 | 2005-12-19 |  |  |  |  | 2006-07-29 | 0 | 0 | 02 | EK | ML4 | 02K | MJ | P2030 | P15 | M | J | E | 19 | 17 | E1B1 | 100 | 02K | ML100 |  |  |  |  |  |  |  |  |
| PK02GML100 |  | 02G Recv. Planning V. Data - Special Equip. 101-L | 1d | 2005-10-28 A | 2005-10-28 A | PK000MJ22N | 100% |  | 2006-01-03 | 2006-01-03 |  |  |  |  | 2006-07-29 | 0 | 0 | 02 | EK | ML4 | 02G | MJ | ML425 | P15 | M | J | E | 9 | 22 | E1B1 | 100 | 02G | ML100 | 101L |  |  |  |  |  |  |  |
| PK02LML100 |  | 02L Recv. Planning V. Data - Special Equip. 104-L | 1d | 2005-10-28 A | 2005-10-28 A | PK000ML42N | 100% |  | 2005-11-08 | 2005-11-08 |  |  |  |  | 2006-07-29 | 0 | 0 | 02 | EK | ML4 | 02L | MJ | P2030 | P15 | M | J | E | 23 | 19 | E1B1 | 100 |  |  | 104L |  |  |  |  |  |  |  |
| PK02GMJ154 |  | 02G Recv. Planning V. Data - Pumps 101,102-JLJ/JLJA, 113-J/JA, 2104-LJA/B | 1d | 2005-10-31 A | 2005-11-01 A | PK000MJ35N | 100% |  | 2005-10-31 | 2005-10-31 |  |  |  |  | 2006-07-29 | 0 | 0 | 02 | EK | MJ3 | 02G | MJ | P2030 | P15 | M | J | E | 9 | 22 | E1B1 | 154 | 02G | MJ154 |  |  |  |  |  |  |  |  |
| PK02KMJ154 |  | 02K Recv. Planning V. Data - Pumps 111-J, 115-J | 1d | 2005-10-31 A | 2005-10-31 A | PK000MJ35N | 100% |  |  |  |  |  |  |  | 2006-07-29 | 0 | 0 | 02 | EK | MJ3 | 02K | MJ | P2030 | P15 | M | J | E | 19 | 17 | E1B1 | 154 | 02K | MJ154 |  |  |  |  |  |  |  |  |
| PK02LMJ154 |  | 02L Recv. Planning V. Data - Pumps | 1d | 2005-10-31 A | 2005-10-31 A | PK000MJ32N, PK000MJ35N | 100% |  |  |  |  |  |  |  | 2006-07-29 | 0 | 0 | 02 | EK | MJ3 | 02L | MJ | P2030 | P15 | M | J | E | 23 | 19 | E1B1 | 154 |  |  |  |  |  |  |  |  |  |  |
| PK02CMJ154 |  | 02C Recv. Planning V. Data - Pumps 112-J/JA | 5d | 2005-12-02 A | 2005-12-16 A | PK000MJ35N, PK000MJ35P SS+30d | 100% |  | 2005-12-30 | 2006-01-06 |  |  |  |  | 2006-07-29 | 0 | 0 | 02 | EK | MJ3 | 02C | MJ | P2030 | P15 | M | J | E | 14 | 21 | E1B1 |  |  |  | 112J |  |  |  |  |  |  |  |
| PK02DMJ154 |  | 02D Recv. Planning V. Data - Pumps 120-J/JA,124-J/JA | 5d | 2005-12-02 A | 2005-12-16 A | PK000MJ35N, PK000MJ35P SS | 100% |  | 2005-12-30 | 2006-01-06 |  |  |  |  | 2006-07-29 | 0 | 0 | 02 | EK | MJ3 | 02D | MJ | P2030 | P15 | M | J | E | 33 | 26 | E1B1 | 154 | 02D | MJ154 |  |  |  |  |  |  |  |  |
| PK02FMJ154 |  | 02F Recv. Planning V. Data - Pumps 104-J/JA | 1d | 2005-12-02 A | 2005-12-16 A | PK000MJ31N, PK000MJ34N | 100% |  | 2005-12-27 | 2005-12-27 |  |  |  |  | 2006-07-29 | 0 | 0 | 02 | EK | MJ3 | 02F | MJ | P2030 | P15 | M | J | E | 29 | 16 | E1B1 | 154 | 02F | MJ154 | 104J |  |  |  |  |  |  |  |
| PK02FMJV01 |  | 02F MJ301 104-J/JA - Piping Prod. V. Data | 35d | 2005-12-21 A | 2006-05-26 A | PK000MJ31J, PK000MJ31N | 100% |  | 2006-01-30 | 2006-03-17 |  |  |  | EBWK - Global | 2006-07-29 | 0 | 0 | 02 | EK | MJ3 | 02F | MJ | MJ301 |  | M | M | E |  |  |  |  |  |  | X | 06 |  |  |  |  |  |  |
| PK02FMJV02 |  | 02F MJ301 104-J/JA - Civil Prod. V. Data | 35d | 2005-12-21 A | 2006-06-12 A | PK000MJ31J, PK000MJ31N | 100% |  | 2006-01-30 | 2006-03-17 |  |  |  | EBWK - Global | 2006-07-29 | 0 | 0 | 02 | EK | MJ3 | 02F | MJ | MJ301 |  | M | M | E |  |  |  |  |  |  | X | 06 | Dynamic Loads Needed,Metric Unit Conversion |  |  |  |  |  |
| PK02FMJV03 |  | 02F MJ301 104-J/JA - E&I Prod. V. Data | 35d | 2005-12-21 A | 2007-02-21 | PK000MJ31J, PK000MJ31N | 49% | 18d | 2005-12-21 | 2006-02-07 | 517d | 0d |  | EBWK - Global | 2006-07-29 | 0 | 0 | 02 | EK | MJ3 | 02F | MJ | MJ301 |  | M | M | E |  |  |  |  |  |  | X | 06 | Outstanding Reg/PSV issue |  |  |  |  |  |
| PK02AMJ154 |  | 02A Recv. Planning V. Data - Pumps 130-J/JA, 131-J/JA | 1d | 2006-01-01 A | 2006-01-06 A | PK000MJ37N | 100% |  | 2006-01-16 | 2006-01-16 |  |  |  |  | 2006-07-29 | 0 | 0 | 02 | EK | MJ3 | 02A | MJ | P2030 | P15 | M | J | E | 36 | 25 | E1B1 | 154 | 02A | MJ154 |  |  |  |  |  |  |  |  |
| PK02BMLV01 |  | 02B ML313 160-L - Piping Prod. V. Data | 35d | 2006-01-30 A | 2006-04-03 A | PK000ML31J | 100% |  | 2006-01-30 | 2006-03-17 |  |  |  | EBWK - Global | 2006-07-29 | 0 | 0 | 02 | EK | ML3 | 02B | MJ | ML313 |  | M | M | E |  |  |  |  |  |  | X |  |  |  |  |  |  |  |
| PK02BMLV02 |  | 02B ML313 160-L - Civil Prod. V. Data | 35d | 2006-01-30 A | 2006-04-03 A | PK000ML31J | 100% |  | 2006-01-30 | 2006-03-17 |  |  |  | EBWK - Global | 2006-07-29 | 0 | 0 | 02 | EK | ML3 | 02B | MJ | ML313 |  | M | M | E |  |  |  |  |  |  | X |  |  |  |  |  |  |  |
| PK02BMLV03 |  | 02B ML313 160-L - E&I Prod. V. Data | 35d | 2006-01-30 A | 2006-05-26 A | PK000ML31J | 100% |  | 2006-01-30 | 2006-03-17 |  |  |  | EBWK - Global | 2006-07-29 | 0 | 0 | 02 | EK | ML3 | 02B | MJ | ML313 |  | M | M | E |  |  |  |  |  |  | X |  |  |  |  |  |  |  |
| PK02CMJV01 |  | 02C MJ750 103-JTC Surface Condenser for 103-JT - Prod. V. Data | 35d | 2006-01-30 A | 2006-01-30 A | PK000MJ75J | 100% |  | 2006-01-30 | 2006-03-17 |  |  |  | EBWK - Global | 2006-07-29 | 0 | 0 | 02 | EK | MJ7 | 02C | MJ | MJ750 |  | M | M | E |  |  |  |  |  |  | X |  |  |  |  |  |  |  |
| PK02CMJV02 |  | 02C MJ750 103-JTCC Ejector System for 103-JTC - Prod. V. Data | 35d | 2006-01-30 A | 2006-01-30 A | PK000MJ75J | 100% |  | 2006-01-30 | 2006-03-17 |  |  |  | EBWK - Global | 2006-07-29 | 0 | 0 | 02 | EK | MJ7 | 02C | MJ | MJ750 |  | M | M | E |  |  |  |  |  |  | X |  |  |  |  |  |  |  |
| PK02CMJV03 |  | 02C MJ202 103-J/105-J - Civil Prod. V. Data | 35d | 2006-01-30 A | 2006-01-31 A | PK000MJ21J | 100% |  | 2006-01-30 | 2006-03-17 |  |  |  | EBWK - Global | 2006-07-29 | 0 | 0 | 02 | EK | MJ2 | 02C | MJ | MJ202 |  | M | M | E |  |  |  |  |  |  | X |  |  |  |  |  |  |  |
| PK02CMJV04 |  | 02C MJ202 103-J/105-J - Piping Prod. V. Data | 35d | 2006-01-30 A | 2006-05-26 A | PK000MJ21J | 100% |  | 2006-01-30 | 2006-03-17 |  |  |  | EBWK - Global | 2006-07-29 | 0 | 0 | 02 | EK | MJ2 | 02C | MJ | MJ202 |  | M | M | E |  |  |  |  |  |  | X |  |  |  |  |  |  |  |
| PK02CMJV05 |  | 02C MJ202 103-J/105-J - E&I Prod. V. Data | 35d | 2006-01-30 A | 2006-05-25 A | PK000MJ21J | 100% |  | 2006-01-30 | 2006-03-17 |  |  |  | EBWK - Global | 2006-07-29 | 0 | 0 | 02 | EK | MJ2 | 02C | MJ | MJ202 |  | M | M | E |  |  |  |  |  |  | X |  |  |  |  |  |  |  |
| PK02CMJV06 |  | 02C MJ305 112-J/JA - Civil Prod. V. Data | 35d | 2006-01-30 A | 2006-04-21 A | PK000MJ35J | 100% |  | 2006-01-30 | 2006-03-17 |  |  |  | EBWK - Global | 2006-07-29 | 0 | 0 | 02 | EK | MJ3 | 02C | MJ | MJ305 |  | M | M | E |  |  |  |  |  |  | X |  |  |  |  |  |  |  |
| PK02CMJV07 |  | 02C MJ305 112-J/JA - Piping Prod. V. Data | 35d | 2006-01-30 A | 2006-04-03 A | PK000MJ35J | 100% |  | 2006-01-30 | 2006-03-17 |  |  |  | EBWK - Global | 2006-07-29 | 0 | 0 | 02 | EK | MJ3 | 02C | MJ | MJ305 |  | M | M | E |  |  |  |  |  |  | X |  |  |  |  |  |  |  |
| PK02CMJV08 |  | 02C MJ305 112-J/JA - E&I Prod. V. Data | 35d | 2006-01-30 A | 2006-06-30 A | PK000MJ35J | 100% |  | 2006-01-30 | 2006-03-17 |  |  |  | EBWK - Global | 2006-07-29 | 0 | 0 | 02 | EK | MJ3 | 02C | MJ | MJ305 |  | M | M | E |  |  |  |  |  |  | X |  |  |  |  |  |  |  |
| PK02DMJV01 |  | 02D MJ305 120-J/JA, 124-J/JA - Civil Prod. V. Data | 35d | 2006-01-30 A | 2006-04-21 A | PK000MJ35J | 100% |  | 2006-01-30 | 2006-03-17 |  |  |  | EBWK - Global | 2006-07-29 | 0 | 0 | 02 | EK | MJ3 | 02D | MJ | MJ305 |  | M | M | E |  |  |  |  |  |  | X |  |  |  |  |  |  |  |
| PK02DMJV02 |  | 02D MJ305 120-J/JA, 124-J/JA - Piping Prod. V. Data | 35d | 2006-01-30 A | 2006-04-03 A | PK000MJ35J | 100% |  | 2006-01-30 | 2006-03-17 |  |  |  | EBWK - Global | 2006-07-29 | 0 | 0 | 02 | EK | MJ3 | 02D | MJ | MJ305 |  | M | M | E |  |  |  |  |  |  | X |  |  |  |  |  |  |  |
| PK02DMJV03 |  | 02D MJ305 120-J/JA, 124-J/JA - E&I Prod. V. Data | 35d | 2006-01-30 A | 2006-06-07 A | PK000MJ35J | 100% |  | 2006-01-30 | 2006-03-17 |  |  |  | EBWK - Global | 2006-07-29 | 0 | 0 | 02 | EK | MJ3 | 02D | MJ | MJ305 |  | M | M | E |  |  |  |  |  |  | X |  |  |  |  |  |  |  |
| PK02FMJV04 |  | 02F MJ304 2003-J/JA - Civil Prod. V. Data | 35d | 2006-01-30 A | 2006-01-30 A | PK000MJ34J | 100% |  | 2006-01-30 | 2006-03-17 |  |  |  | EBWK - Global | 2006-07-29 | 0 | 0 | 02 | EK | MJ3 | 02F | MJ | MJ304 |  | M | M | E |  |  |  |  |  |  | X |  |  |  |  |  |  |  |
| PK02FMJV05 |  | 02F MJ304 2003-J/JA - Piping Prod. V. Data | 35d | 2006-01-30 A | 2006-01-30 A | PK000MJ34J | 100% |  | 2006-01-30 | 2006-03-17 |  |  |  | EBWK - Global | 2006-07-29 | 0 | 0 | 02 | EK | MJ3 | 02F | MJ | MJ304 |  | M | M | E |  |  |  |  |  |  | X |  |  |  |  |  |  |  |
| PK02FMJV06 |  | 02F MJ304 2003-J/JA - E&I Prod. V. Data | 35d | 2006-01-30 A | 2006-01-30 A | PK000MJ34J | 100% |  | 2006-01-30 | 2006-03-17 |  |  |  | EBWK - Global | 2006-07-29 | 0 | 0 | 02 | EK | MJ3 | 02F | MJ | MJ304 |  | M | M | E |  |  |  |  |  |  | X |  |  |  |  |  |  |  |
| PK02GMJV01 |  | 02G MJ202 102-J - Civil Prod. V. Data | 35d | 2006-01-30 A | 2006-01-30 A | PK000MJ21J | 100% |  | 2006-01-30 | 2006-03-17 |  |  |  | EBWK - Global | 2006-07-29 | 0 | 0 | 02 | EK | MJ2 | 02G | MJ | MJ202 |  | M | M | E |  |  |  |  |  |  | X |  |  |  |  |  |  |  |
| PK02GMJV02 |  | 02G MJ202 102-J - Piping Prod. V. Data | 35d | 2006-01-30 A | 2006-04-21 A | PK000MJ21J | 100% |  | 2006-01-30 | 2006-03-17 |  |  |  | EBWK - Global | 2006-07-29 | 0 | 0 | 02 | EK | MJ2 | 02G | MJ | MJ202 |  | M | M | E |  |  |  |  |  |  | X |  |  |  |  |  |  |  |
| PK02GMJV03 |  | 02G MJ202 102/3/5-J - E&I Prod. V. Data | 35d | 2006-01-30 A | 2006-08-15 A | PK000MJ21J | 100% |  | 2006-01-30 | 2006-03-17 |  |  |  | EBWK - Global | 2006-07-29 | 0 | 0 | 02 | EK | MJ2 | 02G | MJ | MJ202 |  | M | M | E |  |  |  |  |  |  | X |  | Seal Gas Panel,Lube oil connections |  |  |  |  |  |
| PK02GMJV04 |  | 02G MJ750 101-JTC Surface Condenser for 101/104-JT - Prod. V. Data | 35d | 2006-01-30 A | 2006-01-30 A | PK000MJ75J | 100% |  | 2006-01-30 | 2006-03-17 |  |  |  | EBWK - Global | 2006-07-29 | 0 | 0 | 02 | EK | MJ7 | 02G | MJ | MJ750 |  | M | M | E |  |  |  |  |  |  | X |  |  |  |  |  |  |  |
| PK02GMJV05 |  | 02G MJ750 101-JTCC Ejector System for 101-JTC - Prod. V. Data | 35d | 2006-01-30 A | 2006-01-30 A | PK000MJ75J | 100% |  | 2006-01-30 | 2006-03-17 |  |  |  | EBWK - Global | 2006-07-29 | 0 | 0 | 02 | EK | MJ7 | 02G | MJ | MJ750 |  | M | M | E |  |  |  |  |  |  | X |  |  |  |  |  |  |  |
| PK02GMJV06 |  | 02G MJ201 101-J - Civil Prod. V. Data | 35d | 2006-01-30 A | 2006-06-05 A | PK000MJ22J | 100% |  | 2006-01-30 | 2006-03-17 |  |  |  | EBWK - Global | 2006-07-29 | 0 | 0 | 02 | EK | MJ2 | 02G | MJ | MJ201 |  | M | M | E |  |  |  |  |  |  | X |  | GA Drawing needed |  |  |  |  |  |
| PK02GMJV07 |  | 02G MJ201 101-J - Piping Prod. V. Data | 35d | 2006-01-30 A | 2006-09-18 A | PK000MJ22J | 100% |  | 2006-01-30 | 2006-03-17 |  |  |  | EBWK - Global | 2006-07-29 | 0 | 0 | 02 | EK | MJ2 | 02G | MJ | MJ201 |  | M | M | E |  |  |  |  |  |  | X |  | Need Nozzles,Lube Oil Data |  |  |  |  |  |
| PK02GMJV08 |  | 02G MJ201 101-J - E&I Prod. V. Data | 35d | 2006-01-30 A | 2007-01-29 | PK000MJ22J | 100% | 0d | 2006-01-30 | 2006-03-17 | 535d | 0d | 2006-11-17 | EBWK - Global | 2006-07-29 | 0 | 0 | 02 | EK | MJ2 | 02G | MJ | MJ201 |  | M | M | E |  |  |  |  |  |  | X |  | Potential Delay to Test due to Vendor non responsive. |  |  |  |  |  |
| PK02GMJV09 |  | 02G MJ305 113-J/JA - Civil Prod. V. Data | 35d | 2006-01-30 A | 2006-04-21 A | PK000MJ35J | 100% |  | 2006-01-30 | 2006-03-17 |  |  |  | EBWK - Global | 2006-07-29 | 0 | 0 | 02 | EK | MJ3 | 02G | MJ | MJ305 |  | M | M | E |  |  |  |  |  |  | X |  |  |  |  |  |  |  |
| PK02GMJV10 |  | 02G MJ305 113-J/JA - Piping Prod. V. Data | 35d | 2006-01-30 A | 2006-04-03 A | PK000MJ35J | 100% |  | 2006-01-30 | 2006-03-17 |  |  |  | EBWK - Global | 2006-07-29 | 0 | 0 | 02 | EK | MJ3 | 02G | MJ | MJ305 |  | M | M | E |  |  |  |  |  |  | X |  |  |  |  |  |  |  |
| PK02GMJV11 |  | 02G MJ305 113-J/JA - E&I Prod. V. Data | 35d | 2006-01-30 A | 2006-08-14 A | PK000MJ35J | 100% |  | 2006-01-30 | 2006-03-17 |  |  |  | EBWK - Global | 2006-07-29 | 0 | 0 | 02 | EK | MJ3 | 02G | MJ | MJ305 |  | M | M | E |  |  |  |  |  |  | X |  |  |  |  |  |  |  |
| PK02KMJV01 |  | 02K MJ305 111-J,115-J - Civil Prod. V. Data | 35d | 2006-01-30 A | 2006-04-21 A | PK000MJ35J | 100% |  | 2006-01-30 | 2006-03-17 |  |  |  | EBWK - Global | 2006-07-29 | 0.2 | 0 | 02 | EK | MJ3 | 02K | MJ | MJ305 |  | M | M | E |  |  |  |  |  |  | X |  |  |  |  |  |  |  |
| PK02KMJV02 |  | 02K MJ305 111-J,115-J - Piping Prod. V. Data | 35d | 2006-01-30 A | 2006-04-03 A | PK000MJ35J | 100% |  | 2006-01-30 | 2006-03-17 |  |  |  | EBWK - Global | 2006-07-29 | 0.2 | 0 | 02 | EK | MJ3 | 02K | MJ | MJ305 |  | M | M | E |  |  |  |  |  |  | X |  |  |  |  |  |  |  |
| PK02KMJV03 |  | 02K MJ305 111-J,115-J - E&I Prod. V. Data | 35d | 2006-01-30 A | 2006-06-07 A | PK000MJ35J | 100% |  | 2006-01-30 | 2006-03-17 |  |  |  | EBWK - Global | 2006-07-29 | 0.2 | 0 | 02 | EK | MJ3 | 02K | MJ | MJ305 |  | M | M | E |  |  |  |  |  |  | X |  |  |  |  |  |  |  |
| PK02KMLV01 |  | 02K ML420 115-L - Piping Prod. V. Data | 35d | 2006-01-30 A | 2006-01-30 A | PK000ML42J | 100% |  | 2006-01-30 | 2006-03-17 |  |  |  | EBWK - Global | 2006-07-29 | 0 | 0 | 02 | EK | ML4 | 02K | MJ | ML420 |  | M | M | E |  |  |  |  |  |  | X |  |  |  |  |  |  |  |
| PK02KMLV02 |  | 02K ML420 115-L - Civil Prod. V. Data | 35d | 2006-01-30 A | 2006-01-30 A | PK000ML42J | 100% |  | 2006-01-30 | 2006-03-17 |  |  |  | EBWK - Global | 2006-07-29 | 0 | 0 | 02 | EK | ML4 | 02K | MJ | ML420 |  | M | M | E |  |  |  |  |  |  | X |  |  |  |  |  |  |  |
| PK02KMLV03 |  | 02K ML420 115-L - E&I Prod. V. Data | 35d | 2006-01-30 A | 2006-01-30 A | PK000ML42J | 100% |  | 2006-01-30 | 2006-03-17 |  |  |  | EBWK - Global | 2006-07-29 | 0 | 0 | 02 | EK | ML4 | 02K | MJ | ML420 |  | M | M | E |  |  |  |  |  |  | X |  |  |  |  |  |  |  |
| PK02KMLV04 |  | 02K ML430 110-L - Piping Prod. V. Data | 35d | 2006-01-30 A | 2006-01-30 A | PK000ML43J | 100% |  | 2006-01-30 | 2006-03-17 |  |  |  | EBWK - Global | 2006-07-29 | 0 | 0 | 02 | EK | ML4 | 02K | MJ | ML430 |  | M | M | E |  |  |  |  |  |  | X |  |  |  |  |  |  |  |
| PK02KMLV05 |  | 02K ML430 110-L - Civil Prod. V. Data | 35d | 2006-01-30 A | 2006-01-30 A | PK000ML43J | 100% |  | 2006-01-30 | 2006-03-17 |  |  |  | EBWK - Global | 2006-07-29 | 0 | 0 | 02 | EK | ML4 | 02K | MJ | ML430 |  | M | M | E |  |  |  |  |  |  | X |  |  |  |  |  |  |  |
| PK02KMLV06 |  | 02K ML430 110-L - E&I Prod. V. Data | 35d | 2006-01-30 A | 2006-01-30 A | PK000ML43J | 100% |  | 2006-01-30 | 2006-03-17 |  |  |  | EBWK - Global | 2006-07-29 | 0 | 0 | 02 | EK | ML4 | 02K | MJ | ML430 |  | M | M | E |  |  |  |  |  |  | X |  |  |  |  |  |  |  |
| PK02LMJV01 |  | 02L MJ302 107-J - Civil Prod. V. Data | 35d | 2006-01-30 A | 2006-06-07 A | PK000MJ32J, PK000MJ32N | 100% |  | 2006-01-30 | 2006-03-17 |  |  |  | EBWK - Global | 2006-07-29 | 0.3 | 0 | 02 | EK | MJ3 | 02L | MJ | MJ302 |  | M | M | E |  |  |  |  |  |  | X | 06 | Updated G/A Drawing required,Civil needs dynamic loading | 50 | 60 | 90 | 15 | CD |
| PK02LMJV02 |  | 02L MJ302 107-J - Piping Prod. V. Data | 35d | 2006-01-30 A | 2006-06-12 A | PK000MJ32J, PK000MJ32N | 100% |  | 2006-01-30 | 2006-03-17 |  |  |  | EBWK - Global | 2006-07-29 | 0.3 | 0 | 02 | EK | MJ3 | 02L | MJ | MJ302 |  | M | M | E |  |  |  |  |  |  | X | 06 | Motor Data 107-JAM Needed | 50 | 60 | 90 | 15 | CD |
| PK02LMJV03 |  | 02L MJ302 107-J - E&I Prod. V. Data | 35d | 2006-01-30 A | 2006-11-03 A | PK000MJ32J, PK000MJ32N | 100% |  | 2006-01-30 | 2006-03-17 |  |  |  | EBWK - Global | 2006-07-29 | 0.3 | 0 | 02 | EK | MJ3 | 02L | MJ | MJ302 |  | M | M | E |  |  |  |  |  |  | X | 06 |  | 50 | 60 | 90 | 15 | CD |
| PK02LMJV04 |  | 02L MJ305 116-J/JA,121-J/JA - Piping Prod. V. Data | 35d | 2006-01-30 A | 2006-04-03 A | PK000MJ35J | 100% |  | 2006-01-30 | 2006-03-17 |  |  |  | EBWK - Global | 2006-07-29 | 0.3 | 0 | 02 | EK | MJ3 | 02L | MJ | MJ305 |  | M | M | E |  |  |  |  |  |  | X |  |  |  |  |  |  |  |
| PK02LMJV05 |  | 02L MJ305 116-J/JA,121-J/JA - Civil Prod. V. Data | 35d | 2006-01-30 A | 2006-04-20 A | PK000MJ35J | 100% |  | 2006-01-30 | 2006-03-17 |  |  |  | EBWK - Global | 2006-07-29 | 0.3 | 0 | 02 | EK | MJ3 | 02L | MJ | MJ305 |  | M | M | E |  |  |  |  |  |  | X |  |  |  |  |  |  |  |
| PK02LMJV06 |  | 02L MJ305 116-J/JA,121-J/JA - E&I Prod. V. Data | 35d | 2006-01-30 A | 2006-06-07 A | PK000MJ35J | 100% |  | 2006-01-30 | 2006-03-17 |  |  |  | EBWK - Global | 2006-07-29 | 0.3 | 0 | 02 | EK | MJ3 | 02L | MJ | MJ305 |  | M | M | E |  |  |  |  |  |  | X |  |  |  |  |  |  |  |
| PK02LMLV01 |  | 02L ML420 104-L - Pipe Prod. V. Data | 35d | 2006-01-30 A | 2006-01-30 A | PK000ML42J | 100% |  | 2006-01-30 | 2006-03-17 |  |  |  | EBWK - Global | 2006-07-29 | 0 | 0 | 02 | EK | ML4 | 02L | MJ | ML420 |  | M | M | E |  |  |  |  |  |  | X |  |  |  |  |  |  |  |
| PK02LMLV02 |  | 02L ML420 104-L - Civil Prod. V. Data | 35d | 2006-01-30 A | 2006-01-30 A | PK000ML42J | 100% |  | 2006-01-30 | 2006-03-17 |  |  |  | EBWK - Global | 2006-07-29 | 0 | 0 | 02 | EK | ML4 | 02L | MJ | ML420 |  | M | M | E |  |  |  |  |  |  | X |  |  |  |  |  |  |  |
| PK02LMLV03 |  | 02L ML420 104-L - E&I Prod. V. Data | 35d | 2006-01-30 A | 2006-01-30 A | PK000ML42J | 100% |  | 2006-01-30 | 2006-03-17 |  |  |  | EBWK - Global | 2006-07-29 | 0 | 0 | 02 | EK | ML4 | 02L | MJ | ML420 |  | M | M | E |  |  |  |  |  |  | X |  |  |  |  |  |  |  |
| PK02LMLV04 |  | 02L ML593 132-L1,L2,L3,L4 - Piping Prod. V. Data | 35d | 2006-01-30 A | 2006-01-30 A | PK000MJ75J | 100% |  | 2006-01-30 | 2006-03-17 |  |  |  | EBWK - Global | 2006-07-29 | 0 | 0 | 02 | EK | ML5 | 02L | MJ | ML593 |  | M | M | E |  |  |  |  |  |  | X |  |  |  |  |  |  |  |
| PK02LMLV05 |  | 02L ML593 132-L1,L2,L3,L4 - Civil Prod. V. Data | 35d | 2006-01-30 A | 2006-01-30 A | PK000MJ75J | 100% |  | 2006-01-30 | 2006-03-17 |  |  |  | EBWK - Global | 2006-07-29 | 0 | 0 | 02 | EK | ML5 | 02L | MJ | ML593 |  | M | M | E |  |  |  |  |  |  | X |  |  |  |  |  |  |  |
| PK02LMLV06 |  | 02L ML593 132-L1,L2,L3,L4 - E&I Prod. V. Data | 35d | 2006-01-30 A | 2006-01-30 A | PK000MJ75J | 100% |  | 2006-01-30 | 2006-03-17 |  |  |  | EBWK - Global | 2006-07-29 | 0 | 0 | 02 | EK | ML5 | 02L | MJ | ML593 |  | M | M | E |  |  |  |  |  |  | X |  |  |  |  |  |  |  |
| PK02PMUV01 |  | 02P MU350 101-U - Piping Prod. V. Data | 35d | 2006-01-30 A | 2006-01-30 A | PK000MU35J | 100% |  | 2006-01-30 | 2006-03-17 |  |  |  | EBWK - Global | 2006-07-29 | 0 | 0 | 02 | EK | MU3 | 02P | MJ | MU350 |  | M | M | E |  |  |  |  |  |  | X |  |  |  |  |  |  |  |

| ID | WBS | Activity | Duration | Start | Finish | Predecessors | Complete | Planned start | Planned finish | Calendar | zData Date | PCA Criticality Index | PCA Duration Sensitivity | EB02 - UNIT | EB01 - RESP | EB06 - WORK OP | EB03 - AREA | EB05 - DISCIPLINE | EB07 - REQN | EB08 - TAG | EB04 - CLASS | EB09 - IPMS | EB00 - EPC | Optimistic Duration | Most Likely Duration | Pessimistic Duration | EB21 - Rev 2 Risk Associations | user_text1 | user_integer1 | EB11 - FLAG | EB10 - KEY | EB17 - Suffix | Sequence | User Defined Field 1 | User Definer Field 2 | EB15 - Civil / U/G Path of Construction | EB16 - Piping Path of Construction | user_integer2 | user_text2 | EB12 - TEMP | EB19 - System |
| --- | --- | --- | --- | --- | --- | --- | --- | --- | --- | --- | --- | --- | --- | --- | --- | --- | --- | --- | --- | --- | --- | --- | --- | --- | --- | --- | --- | --- | --- | --- | --- | --- | --- | --- | --- | --- | --- | --- | --- | --- | --- |
| PK02PMUV02 |  | 02P MU350 101-U - Civil Prod. V. Data | 35d | 2006-01-30 A | 2006-01-30 A | PK000MU35J | 100% | 2006-01-30 | 2006-03-17 | EBWK - Global | 2006-07-29 | 0 | 0 | 02 | EK | MU3 | 02P | MJ | MU350 | X | M | M | E |  |  |  |  |  |  |  |  |  |  |  |  |  |  |  |  |  |  |
| PK02PMUV03 |  | 02P MU350 101-U - E&I Prod. V. Data | 35d | 2006-01-30 A | 2006-01-30 A | PK000MU35J | 100% | 2006-01-30 | 2006-03-17 | EBWK - Global | 2006-07-29 | 0 | 0 | 02 | EK | MU3 | 02P | MJ | MU350 | X | M | M | E |  |  |  |  |  |  |  |  |  |  |  |  |  |  |  |  |  |  |
| PK02LMLV07 |  | 02L MU310 109-L - Piping Prod. V. Data | 35d | 2006-02-14 A | 2006-05-26 A | PK000MU31J | 100% | 2006-03-27 | 2006-05-12 | EBWK - Global | 2006-07-29 | 0 | 0 | 02 | EK | MU3 | 02L | MJ | MU310 | X | M | M | E | 30 | 35 | 50 | 06 |  |  |  |  |  |  |  |  |  |  |  |  |  |  |
| PK02FMUV01 |  | 02F MU310 106-L,108-L - Piping Prod. V. Data | 35d | 2006-02-14 A | 2006-05-26 A | PK000MU31J | 100% | 2006-02-14 | 2006-04-03 | EBWK - Global | 2006-07-29 | 0 | 0 | 02 | EK | MU3 | 02F | MJ | MU310 | X | M | M | E | 30 | 35 | 50 | 06 |  |  |  |  |  |  |  |  |  |  |  |  |  |  |
| PK02FMUV02 |  | 02F MU310 106-L,107-L,108-L - Civil Prod. V. Data | 35d | 2006-02-14 A | 2006-06-26 A | PK000MU31J | 100% | 2006-02-14 | 2006-04-03 | EBWK - Global | 2006-07-29 | 0 | 0 | 02 | EK | MU3 | 02F | MJ | MU310 | X | M | M | E | 30 | 35 | 50 | 06 |  |  |  |  |  |  |  |  |  |  |  |  |  |  |
| PK02FMUV03 |  | 02F MU310 106-L,107-L,108-L - E&I Prod. V. Data | 35d | 2006-02-14 A | 2006-06-26 A | PK000MU31J | 100% | 2006-02-14 | 2006-04-03 | EBWK - Global | 2006-07-29 | 0 | 0 | 02 | EK | MU3 | 02F | MJ | MU310 | X | M | M | E | 30 | 35 | 50 | 06 |  |  |  |  |  |  |  |  |  |  |  |  |  |  |
| PK02LMLV08 |  | 02L MU310 109-L - Civil Prod. V. Data | 35d | 2006-02-14 A | 2006-06-26 A | PK000MU31J | 100% | 2006-02-14 | 2006-04-03 | EBWK - Global | 2006-07-29 | 0 | 0 | 02 | EK | MU3 | 02L | MJ | MU310 | X | M | M | E | 30 | 35 | 50 | 06 |  |  |  |  |  |  |  |  |  |  |  |  |  |  |
| PK02LMLV09 |  | 02L MU310 109-L - E&I Prod. V. Data | 35d | 2006-02-14 A | 2006-06-26 A | PK000MU31J | 100% | 2006-02-14 | 2006-04-03 | EBWK - Global | 2006-07-29 | 0 | 0 | 02 | EK | MU3 | 02L | MJ | MU310 | X | M | M | E | 30 | 35 | 50 | 06 |  |  |  |  |  |  |  |  |  |  |  |  |  |  |
| PK02AMJV01 |  | 02A MJ340 130-J/JA,131-J/JA - Piping Prod. V. Data | 35d | 2006-02-27 A | 2006-05-26 A | PK000MJ37J, PK000MJ37N | 100% | 2006-02-27 | 2006-04-14 | EBWK - Global | 2006-07-29 | 0 | 0 | 02 | EK | MJ3 | 02A | MJ | MJ340 | X | M | M | E |  |  |  |  | 02A Driving Model Development |  |  |  |  |  |  |  |  |  |  |  |  |  |
| PK02AMJV02 |  | 02A MJ340 130-J/JA,131-J/JA - Civil Prod. V. Data | 35d | 2006-02-27 A | 2006-06-12 A | PK000MJ37J, PK000MJ37N | 100% | 2006-02-27 | 2006-04-14 | EBWK - Global | 2006-07-29 | 0 | 0 | 02 | EK | MJ3 | 02A | MJ | MJ340 | X | M | M | E |  |  |  |  | Per Keith should recieve documents on 06/09/06 |  |  |  |  |  |  |  |  |  |  |  |  |  |
| PK02AMJV03 |  | 02A MJ340 130-J/JA,131-J/JA - E&I Prod. V. Data | 35d | 2006-02-27 A | 2006-06-12 A | PK000MJ37J, PK000MJ37N | 100% | 2006-02-27 | 2006-04-14 | EBWK - Global | 2006-07-29 | 0 | 0 | 02 | EK | MJ3 | 02A | MJ | MJ340 | X | M | M | E |  |  |  |  | Per Keith should recieve documents on 06/09/06 |  |  |  |  |  |  |  |  |  |  |  |  |  |
| PK02GMLV01 |  | 02G ML425 101-L - Pipe Prod. V. Data | 35d | 2006-03-27 A | 2006-05-22 A | PK02GML100 | 100% | 2006-03-27 | 2006-05-12 | EBWK - Global | 2006-07-29 | 0 | 0 | 02 | EK | ML4 | 02G | MJ | ML425 | X | M | M | E |  |  |  |  |  |  |  |  |  |  |  |  |  |  |  |  |  |  |
| PK02GMLV02 |  | 02G ML425 101-L - Civil Prod. V. Data | 35d | 2006-03-27 A | 2006-06-26 A | PK02GML100 | 100% | 2006-03-27 | 2006-05-12 | EBWK - Global | 2006-07-29 | 0 | 0 | 02 | EK | ML4 | 02G | MJ | ML425 | X | M | M | E |  |  |  |  |  |  |  |  |  |  |  |  |  |  |  |  |  |  |
| PK02GMLV03 |  | 02G ML425 101-L - E&I Prod. V. Data | 35d | 2006-03-27 A | 2006-08-01 A | PK02GML100 | 100% | 2006-03-27 | 2006-05-12 | EBWK - Global | 2006-07-29 | 0 | 0 | 02 | EK | ML4 | 02G | MJ | ML425 | X | M | M | E |  |  |  |  |  |  |  |  |  |  |  |  |  |  |  |  |  |  |
| PK02GMLV04 |  | 02G MU225 2104-L - Piping Prod. V. Data | 35d | 2006-05-29 A | 2006-08-14 A | PK000MU25J | 100% | 2006-05-29 | 2006-07-14 | EBWK - Global | 2006-07-29 | 0 | 0 | 02 | EK | MU2 | 02G | MJ | MU225 | X | M | M | E | 60 | 70 | 100 | 06 |  | 35 | CD |  |  |  |  |  |  |  |  |  |  |  |
| PK02GMLV05 |  | 02G MU225 2104-L - Civil Prod. V. Data | 35d | 2006-05-29 A | 2006-08-14 A | PK000MU25J | 100% | 2006-05-29 | 2006-07-14 | EBWK - Global | 2006-07-29 | 0 | 0 | 02 | EK | MU2 | 02G | MJ | MU225 | X | M | M | E | 60 | 70 | 100 | 06 |  | 35 | CD |  |  |  |  |  |  |  |  |  |  |  |
| PK02GMLV06 |  | 02G MU225 2104-L - E&I Prod. V. Data | 35d | 2006-05-29 A | 2006-08-23 A | PK000MU25J | 100% | 2006-05-29 | 2006-07-14 | EBWK - Global | 2006-07-29 | 0 | 0 | 02 | EK | MU2 | 02G | MJ | MU225 | X | M | M | E | 60 | 70 | 100 | 06 |  | 35 | CD |  |  |  |  |  |  |  |  |  |  |  |
|  | PI | **Piping Engineering** |  | 2005-03-07 | 2006-12-20 |  |  |  |  |  |  |  |  |  |  |  |  |  |  |  |  |  |  |  |  |  |  |  |  |  |  |  |  |  |  |  |  |  |  |  |  |
| EK020PI010 |  | Develop Plot Plan & ID Areas - ISBL (Area 02) ICA | 10d | 2005-03-07 A | 2005-04-01 A | EK000YA002 SS+10d | 100% | 2005-03-07 | 2005-03-18 |  | 2006-07-29 | 0 | 0 | 02 | EK | P10 | 020 | PI |  |  | P |  | E |  |  |  |  |  |  |  | P17 | E1B1 |  |  |  |  |  |  |  |  |  |
| EK000PE115 |  | Equivalent Line Counts By Planning Area - ISBL | 10d | 2005-03-14 A | 2005-04-08 A | EK020PI010 SS+5d | 100% | 2005-03-14 | 2005-03-25 | 2.a. 5 day w/US holidays | 2006-07-29 | 0 | 0 | 02 | EK | G10 | 020 | PI |  |  | P |  | E |  |  |  |  |  |  | X | P20 | E1B1 |  |  |  |  |  |  |  |  |  |
| EK000PI150 |  | ISBL Pipe Rack Study | 7d | 2005-03-21 A | 2005-04-12 A | EK020PI010 SS+8d | 100% | 2005-03-21 | 2005-03-29 |  | 2006-07-29 | 0 | 0 | 02 | EK | P20 | 020 | PI |  |  | P |  | E |  |  |  |  |  |  | X | P20 | E1B1 |  |  |  |  |  |  |  |  |  |
| EK020PI011 |  | Plot Plan - ISBL (Area 02) Client ICA Approval | 10d | 2005-04-04 A | 2005-04-18 A | EK020PI010, EK000PI150 FF | 100% | 2005-04-04 | 2005-04-15 |  | 2006-07-29 | 0 | 0 | 02 | EK | P10 | 020 | PI |  |  | P |  | E |  |  |  |  |  |  | X | P17 | E1B1 |  |  |  |  |  |  |  |  |  |
| EK02HPI030 |  | 02H Conceptual Layout - Supersketches | 20d | 2005-04-18 A | 2005-05-13 A | EK020PI010 SS+5d, EK020SY020 FF | 100% | 2005-05-20 | 2005-06-17 |  | 2006-07-29 | 0 | 0 | 02 | EK | P20 | 02H | PI |  |  | P |  | E |  |  |  |  |  |  | N | P01 | E1B1 | 030 | 02H | PI030 | 11 | 20 |  |  |  |  |
| EK02API030 |  | 02A Conceptual Layout - Supersketches | 20d | 2005-04-22 A | 2005-05-20 A | EK020PI010 SS+5d, EK020SY020 | 100% | 2005-05-20 | 2005-06-17 |  | 2006-07-29 | 0 | 0 | 02 | EK | P20 | 02A | PI |  |  | P |  | E |  |  |  |  |  |  | N | P01 | E1B1 | 030 | 02A | PI030 | 36 | 25 |  |  |  |  |
| EK02BPI030 |  | 02B Conceptual Layout - Supersketches | 20d | 2005-04-22 A | 2005-05-20 A | EK020PI010 SS+5d, EK020SY020 | 100% | 2005-05-20 | 2005-06-17 |  | 2006-07-29 | 0 | 0 | 02 | EK | P20 | 02B | PI |  |  | P |  | E |  |  |  |  |  |  | N | P01 | E1B1 | 030 | 02B | PI030 | 34 | 34 |  |  |  |  |
| EK02EPI030 |  | 02E Conceptual Layout - Supersketches | 20d | 2005-04-22 A | 2005-05-13 A | EK020PI010 SS+5d, EK020SY020 | 100% | 2005-05-20 | 2005-06-17 |  | 2006-07-29 | 0 | 0 | 02 | EK | P20 | 02E | PI |  |  | P |  | E |  |  |  |  |  |  | X | P01 | E1B1 | 030 | 02E | PI030 | 32 | 15 |  |  |  |  |
| EK02JPI030 |  | 02J Conceptual Layout - Supersketches | 20d | 2005-04-22 A | 2005-05-13 A | EK020PI010 SS+5d, EK020SY020 | 100% | 2005-05-20 | 2005-06-17 |  | 2006-07-29 | 0 | 0 | 02 | EK | P20 | 02J | PI |  |  | P |  | E |  |  |  |  |  |  | N | P01 | E1B1 | 030 | 02J | PI030 | 18 | 30 |  |  |  |  |
| EK02KPI030 |  | 02K Conceptual Layout - Supersketches | 20d | 2005-04-22 A | 2005-05-13 A | EK020PI010 SS+5d, EK020SY020 | 100% | 2005-05-20 | 2005-06-17 |  | 2006-07-29 | 0 | 0 | 02 | EK | P20 | 02K | PI |  |  | P |  | E |  |  |  |  |  |  | N | P01 | E1B1 | 030 | 02K | PI030 | 19 | 17 |  |  |  |  |
| EK02QPI030 |  | 02Q Conceptual Layout - Supersketches | 20d | 2005-04-22 A | 2005-05-20 A | EK020PI010 SS+5d, EK020SY020 | 100% | 2005-05-20 | 2005-06-17 |  | 2006-07-29 | 0 | 0 | 02 | EK | P20 | 02Q | PI |  |  | P |  | E |  |  |  |  |  |  | N | P01 | E1B1 | 030 | 02Q | PI030 | 41 | 35 |  |  |  |  |
| EK02KPI031 |  | 02K Conceptual Layout - Supersketches (Updated) | 20d | 2005-05-03 A | 2005-08-03 A | EK020PI010 SS+5d, EK020SY020 | 100% | 2005-05-20 | 2005-06-17 |  | 2006-07-29 | 0 | 0 | 02 | EK | P20 | 02K | PI |  |  | P |  | E |  |  |  |  |  |  | N | P01 | E1B1 | 030 | 02K | PI030 | 19 | 17 |  |  |  |  |
| EK02JPI031 |  | 02J Conceptual Layout - Supersketches (Updated) | 20d | 2005-05-13 A | 2005-08-16 A | EK020PI010 SS+5d, EK020SY020 | 100% | 2005-05-20 | 2005-06-17 |  | 2006-07-29 | 0 | 0 | 02 | EK | P20 | 02J | PI |  |  | P |  | E |  |  |  |  |  |  | N | P01 | E1B1 | 030 | 02J | PI030 | 18 | 30 |  |  |  |  |
| EK02NPI030 |  | 02N Conceptual Layout - Supersketches | 10d | 2005-05-23 A | 2005-06-03 A | EK020PI010 SS+5d, EK020SY020 | 100% | 2005-05-23 | 2005-06-06 |  | 2006-07-29 | 0 | 0 | 02 | EK | P20 | 02N | PI |  |  | P |  | E |  |  |  |  |  |  | X | P01 | E1B1 | 030 | 02N | PI030 | 39 | 37 |  |  |  |  |
| EK02DPI030 |  | 02D Conceptual Layout - Supersketches | 5d | 2005-05-27 A | 2005-06-03 A | EK020PI010 FS+5d, EK020SY020 | 100% |  |  |  | 2006-07-29 | 0 | 0 | 02 | EK | P20 | 02D | PI |  |  | P |  | E |  |  |  |  |  |  | X | P01 | E1B1 | 030 | 02D | PI030 | 33 | 26 |  |  |  |  |
| EK020PI012 |  | Plot Plan - ISBL (Area 02) Issue IPL | 30d | 2005-06-03 A | 2005-10-28 A | EK020PI011, EK000MC21P FF+5d, EK000MC23P FF+9d, EK000MC31P FF+5d, EK000MC32P FF+5d, PK000MJ21J FF+5d, PK000MJ22J FF+5d, PK000MJ34J FF | 100% | 2005-06-03 | 2005-07-18 |  | 2006-07-29 | 0 | 0 | 02 | EK | P10 | 020 | PI |  |  | P |  | E |  |  |  |  |  |  | X | P17 | E1B1 |  |  |  |  |  | 30 |  |  |  |
| EK02MPI030 |  | 02M Conceptual Layout - Supersketches | 5d | 2005-07-11 A | 2005-07-14 A | EK020PI010 SS+5d, EK020SY020 FS+52d | 100% | 2005-07-11 | 2005-07-15 |  | 2006-07-29 | 0 | 0 | 02 | EK | P20 | 02M | PI |  |  | P |  | E |  |  |  |  |  |  | X | P01 | E1B1 | 030 | 02M | PI030 | 24 | 28 |  |  |  |  |
| EK02CPI030 |  | 02C Conceptual Layout - Supersketches | 5d | 2005-07-25 A | 2005-08-01 A | EK020PI010, EK020SY020 FS+57d | 100% | 2005-07-18 | 2005-07-22 |  | 2006-07-29 | 0 | 0 | 02 | EK | P20 | 02C | PI |  |  | P |  | E |  |  |  |  |  |  | X | P01 | E1B1 | 030 | 02C | PI030 | 14 | 21 |  |  |  |  |
| EK02DPI031 |  | 02D Conceptual Layout - Supersketches (Re-issue with J-120,124 Data) | 5d | 2005-08-01 A | 2005-08-15 A | EM02DPI100 FF+5d | 100% | 2005-08-01 | 2005-08-05 |  | 2006-07-29 | 0 | 0 | 02 | EK | P20 | 02D | PI |  |  | P |  | E |  |  |  |  |  |  | X | P01 | E1B1 | 030 | 02D | PI030 | 33 | 26 |  |  |  |  |
| EK02GPI030 |  | 02G Conceptual Layout - Supersketches | 20d | 2005-08-01 A | 2005-08-30 A | EK020PI010 SS+5d, EK020SY020 FS+62d | 100% | 2005-08-01 | 2005-08-26 |  | 2006-07-29 | 0 | 0 | 02 | EK | P20 | 02G | PI |  |  | P |  | E |  |  |  |  |  |  | X | P01 | E1B1 | 030 | 02G | PI030 | 9 | 22 |  |  |  |  |
| EK02FPI000 |  | 02F Preliminary Drawings for Supersketch J-104,2003 | 9d | 2005-08-08 A | 2005-08-18 A | EK020PI010 SS | 100% |  |  |  | 2006-07-29 | 0 | 0 | 02 | EK | P20 | 02F | PI |  |  | P |  | E |  |  |  |  |  |  | X | P00 | E2B2 | 030 | 01B | PI030 | 29 | 16 |  |  |  |  |
| EK02LPI000 |  | 02L Preliminary Drawings for Supersketch J-107,116,121 | 1d | 2005-08-12 A | 2005-08-12 A | EK020PI010 SS | 100% |  |  |  | 2006-07-29 | 0 | 0 | 02 | EK | P20 | 02L | PI |  |  | P |  | E |  |  |  |  |  |  | X | P00 | E2B2 | 030 | 01B | PI030 | 23 | 19 |  |  |  |  |
| EK02LPI030 |  | 02L Conceptual Layout - Supersketches | 5d | 2005-08-15 A | 2005-08-22 A | EK020PI010 SS+5d, EK020SY020 FS+62d, EK02LPI000 FF+4d | 100% | 2005-08-12 | 2005-08-18 |  | 2006-07-29 | 0 | 0 | 02 | EK | P20 | 02L | PI |  |  | P |  | E |  |  |  |  |  |  | X | P01 | E1B1 | 030 |  |  | 23 | 19 |  |  |  |  |
| EK02UPICWA |  | 02U Plant Layout Model - Cooling Water | 35d | 2005-08-22 A | 2005-10-13 A | EK020SY020 | 100% | 2005-08-15 | 2005-09-30 |  | 2006-07-29 | 0 | 0 | 02 | EK | U20 | 02U | PI |  |  | U |  | E |  |  |  |  |  |  |  | P02 | E1B1 |  |  |  | 1 | 1 | 16 | EK02UPICBA | X | CW |
| EK02UPIOHA |  | 02U Plant Layout Model - Hot Outfall Sewer | 16d | 2005-08-29 A | 2005-09-12 A | EK020SY020 | 100% | 2005-08-15 | 2005-09-05 |  | 2006-07-29 | 0 | 0 | 02 | EK | U20 | 02U | PI |  |  | U |  | E |  |  |  |  |  |  |  | P02 | E1B1 |  |  |  | 1 | 1 | 16 | EK02UPICBA | X | OH |
| EK02UPIFWA |  | 02U Plant Layout Model - Firewater | 30d | 2005-09-22 A | 2005-11-07 A | EK020SY020 | 100% | 2005-08-15 | 2005-09-23 |  | 2006-07-29 | 0 | 0 | 02 | EK | U20 | 02U | PI |  |  | U |  | E |  |  |  |  |  |  |  | P02 | E1B1 |  |  |  | 1 | 1 | 16 | EK02UPICBA | X | FW |
| EK02UPIOWA |  | 02U Plant Layout Model - Oily Water Sewer | 16d | 2005-09-27 A | 2005-11-04 A | EK020SY020 | 100% | 2005-08-15 | 2005-09-05 |  | 2006-07-29 | 0 | 0 | 02 | EK | U20 | 02U | PI |  |  | U |  | E |  |  |  |  |  |  |  | P02 | E1B1 |  |  |  | 1 | 1 | 16 | EK02UPICBA | X | OW |
| EK02UPICBA |  | 02U Plant Layout Model - Benfield Sewer | 16d | 2005-10-03 A | 2005-11-04 A | EK020SY020 | 100% | 2005-08-15 | 2005-09-05 |  | 2006-07-29 | 0 | 0 | 02 | EK | U20 | 02U | PI |  |  | U |  | E |  |  |  |  |  |  |  | P02 | E1B1 |  |  |  | 1 | 1 | 16 | EK02UPICBA | X | CB |
| EK02FPI030 |  | 02F Conceptual Layout - Supersketches | 10d | 2005-10-03 A | 2005-10-11 A | EK020PI010, EK020SY020 FS+87d, EK02FPI000 FF+4d | 100% | 2005-10-03 | 2005-10-14 |  | 2006-07-29 | 0 | 0 | 02 | EK | P20 | 02F | PI |  |  | P |  | E |  |  |  |  |  |  | X | P01 | E1B1 | 030 | 02F | PI030 | 29 | 16 |  |  |  |  |
| EK02PPI030 |  | 02P Conceptual Layout - Supersketches | 5d | 2005-10-05 A | 2005-10-11 A | EK020PI010 SS+5d | 100% | 2005-10-10 | 2005-10-14 |  | 2006-07-29 | 0 | 0 | 02 | EK | P20 | 02P | PI |  |  | P |  | E |  |  |  |  |  |  | X | P01 | E1B1 | 030 | 02P | PI030 | 40 | 36 |  |  |  |  |
| EK02UPIPSA |  | 02U Plant Layout Model - Process Water Sewer | 35d | 2005-10-17 A | 2005-11-01 A | EK020SY020 | 100% | 2005-08-15 | 2005-09-30 |  | 2006-07-29 | 0 | 0 | 02 | EK | U20 | 02U | PI |  |  | U |  | E |  |  |  |  |  |  |  | P02 | E1B1 |  |  |  | 1 | 1 | 16 | EK02UPICBA | X | PS |
| EK02HPI021 |  | 02H Model Review Comment Resolution | 3d | 2005-12-20 A | 2005-12-30 A | EM02HPI130 | 100% | 2006-01-30 | 2006-02-01 |  | 2006-07-29 | 0 | 0 | 02 | EK | P50 | 02H | PI |  |  | P |  | E |  |  |  |  |  |  |  | P04 |  |  |  |  |  |  |  |  |  |  |
| EK02CPI021 |  | 02C Model Review Comment Resolution | 24d | 2006-01-06 A | 2006-02-16 A | EM02CPI130 | 100% | 2006-02-07 | 2006-03-13 |  | 2006-07-29 | 0 | 0 | 02 | EK | P50 | 02C | PI |  |  | P |  | E |  |  |  |  |  |  |  | P04 |  |  |  |  |  |  |  |  |  |  |
| EK02HPI050 |  | 02H Model Comment Resolution Approval | 3d | 2006-01-09 A | 2006-02-17 A | EM02HPI133 | 100% | 2006-02-06 | 2006-02-08 |  | 2006-07-29 | 0 | 0 | 02 | EK | P50 | 02H | PI |  |  | P |  | E |  |  |  |  |  |  |  | P06 | E1B1 | 050 | 02H | PI050 | 11 | 20 |  |  |  |  |
| EK02KPI050 |  | 02K Model Comment Resolution Approval | 3d | 2006-01-16 A | 2006-01-19 A | EM02KPI120, EM02KPI133 | 100% | 2006-03-06 | 2006-03-08 |  | 2006-07-29 | 0 | 0 | 02 | EK | P50 | 02K | PI |  |  | P |  | E |  |  |  |  |  |  |  | P06 | E1B1 | 050 | 02K | PI050 | 19 | 17 |  |  |  |  |
| EK02MPI050 |  | 02M Model Comment Resolution Approval | 3d | 2006-01-19 A | 2006-01-23 A | EM02MPI120, EM02MPI133 | 100% | 2006-03-01 | 2006-03-03 |  | 2006-07-29 | 0 | 0 | 02 | EK | P50 | 02M | PI |  |  | P |  | E |  |  |  |  |  |  |  | P06 | E1B1 | 050 | 02M | PI050 | 24 | 28 |  |  |  |  |
| EK02DPI050 |  | 02D Model Comment Resolution Approval | 3d | 2006-01-23 A | 2006-02-20 A | EM02DPI120, EM02DPI133 | 100% | 2006-02-06 | 2006-02-08 |  | 2006-07-29 | 0 | 0 | 02 | EK | P50 | 02D | PI |  |  | P |  | E |  |  |  |  |  |  |  | P06 | E1B1 | 050 | 02D | PI050 | 33 | 26 |  |  |  |  |
| EK02FPI050 |  | 02F Model Comment Resolution Approval | 3d | 2006-01-30 A | 2006-02-16 A | EM02FPI120, EM02FPI133 | 100% | 2006-02-06 | 2006-02-08 |  | 2006-07-29 | 0 | 0 | 02 | EK | P50 | 02F | PI |  |  | P |  | E |  |  |  |  |  |  |  | P06 | E1B1 | 050 | 02F | PI050 | 29 | 16 |  |  |  |  |
| EK02API050 |  | 02A Model Comment Resolution Approval | 5d | 2006-01-30 A | 2006-02-06 A | EM02API133 | 100% | 2006-01-30 | 2006-02-03 |  | 2006-07-29 | 0 | 0 | 02 | EK | P50 | 02A | PI |  |  | P |  | E |  |  |  |  |  |  |  | P06 | E1B1 | 050 | 02A | PI050 | 36 | 25 |  |  |  |  |
| EK02PPI050 |  | 02P Model Comment Resolution Approval | 3d | 2006-02-01 A | 2006-02-06 A | EM02PPI120, EM02PPI133 | 100% | 2006-03-07 | 2006-03-09 |  | 2006-07-29 | 0 | 0 | 02 | EK | P50 | 02P | PI |  |  | P |  | E |  |  |  |  |  |  |  | P06 | E1B1 | 050 | 02P | PI050 | 40 | 36 |  |  |  |  |
| EK02BPI050 |  | 02B Model Comment Resolution Approval | 3d | 2006-02-02 A | 2006-02-08 A | EM02BPI120, EM02BPI133 | 100% | 2006-02-27 | 2006-03-01 |  | 2006-07-29 | 0 | 0 | 02 | EK | P50 | 02B | PI |  |  | P |  | E |  |  |  |  |  |  |  | P06 | E1B1 | 050 | 02B | PI050 | 34 | 34 |  |  |  |  |
| EK02QPI050 |  | 02Q Model Comment Resolution Approval | 3d | 2006-02-06 A | 2006-02-09 A | EM02QPI120, EM02QPI133 | 100% | 2006-03-06 | 2006-03-08 |  | 2006-07-29 | 0 | 0 | 02 | EK | P50 | 02Q | PI |  |  | P |  | E |  |  |  |  |  |  |  | P06 | E1B1 | 050 | 02Q | PI050 | 41 | 35 |  |  |  |  |
| EK02JPI050 |  | 02J Model Comment Resolution Approval | 2d | 2006-02-09 A | 2006-02-10 A | EM02JPI133 | 100% | 2006-03-01 | 2006-03-02 |  | 2006-07-29 | 0 | 0 | 02 | EK | P50 | 02J | PI |  |  | P |  | E |  |  |  |  |  |  |  | P06 | E1B1 | 050 | 02J | PI050 | 18 | 30 |  |  |  |  |
| EK02LPI050 |  | 02L Model Comment Resolution Approval | 3d | 2006-02-10 A | 2006-02-16 A | EM02LPI120, EM02LPI133 | 100% | 2006-03-01 | 2006-03-03 |  | 2006-07-29 | 0 | 0 | 02 | EK | P50 | 02L | PI |  |  | P |  | E |  |  |  |  |  |  |  | P06 | E1B1 | 050 |  |  | 23 | 19 |  |  |  |  |
| EK02CPI050 |  | 02C Model Comment Resolution Approval | 8d | 2006-02-22 A | 2006-03-03 A | EM02CPI133 | 100% | 2006-03-01 | 2006-03-10 |  | 2006-07-29 | 0 | 0 | 02 | EK | P50 | 02C | PI |  |  | P |  | E |  |  |  |  |  |  |  | P06 | E1B1 | 050 | 02C | PI050 | 14 | 21 |  |  |  |  |
| EK02EPI050 |  | 02E Model Comment Resolution Approval | 3d | 2006-02-24 A | 2006-02-28 A | EM02EPI120, EM02EPI133 | 100% | 2006-02-06 | 2006-02-08 |  | 2006-07-29 | 0 | 0 | 02 | EK | P50 | 02E | PI |  |  | P |  | E |  |  |  |  |  |  |  | P06 | E1B1 | 050 | 02E | PI050 | 32 | 15 |  |  |  |  |
| EK02NPI050 |  | 02N Model Comment Resolution Approval | 3d | 2006-02-27 A | 2006-03-01 A | EM02NPI133 FS+3d | 100% |  |  |  | 2006-07-29 | 0 | 0 | 02 | EK | P50 | 02N | PI |  |  | P |  | E |  |  |  |  |  |  |  | P06 | E1B1 | 050 | 02N | PI050 | 39 | 37 |  |  |  |  |
| EK02BPI144 |  | 02B OP's & Serv. Model Comment Resolution Approval | 3d | 2006-04-26 A | 2006-04-28 A | EM02BPI136 | 100% |  |  | EBWK 5 Day MEC Holidays | 2006-07-29 | 0 | 0 | 02 | EK | P20 | 02B | PI |  |  | P |  | E |  |  |  |  |  |  |  | P12 | E4B4 | 130 | 02B | PI130 | 34 | 34 |  |  |  |  |
| EK02PPI144 |  | 02P OP's & Serv. Model Comment Resolution Approval | 2d | 2006-05-11 A | 2006-05-15 A | EM02PPI136 | 100% | 2006-05-11 | 2006-05-12 | EBWK 5 Day MEC Holidays | 2006-07-29 | 0 | 0 | 02 | EK | P20 | 02P | PI |  |  | P |  | E |  |  |  |  |  |  |  | P12 | E4B4 | 130 | 02P | PI130 | 40 | 36 |  |  |  |  |
| EK02NPI144 |  | 02N OP's & Serv. Model Comment Resolution Approval | 5d | 2006-06-12 A | 2006-06-13 A | EM02NPI136 | 100% | 2006-06-12 | 2006-06-16 | EBWK 5 Day MEC Holidays | 2006-07-29 | 0 | 0 | 02 | EK | P20 | 02N | PI |  |  | P |  | E |  |  |  |  |  |  |  | P12 | E4B4 | 130 | 02N | PI130 | 39 | 37 |  |  |  |  |
| EK02DPI143 |  | 02D OP's & Serv. Model Comment Resolution Approval | 5d | 2006-06-15 A | 2006-07-10 A | EM02DPI136 | 100% | 2006-06-20 | 2006-06-26 | EBWK 5 Day MEC Holidays | 2006-07-29 | 0 | 0 | 02 | EK | P20 | 02D | PI |  |  | P |  | E |  |  |  |  |  |  |  | P12 | E4B4 | 132 | 02D | PI132 | 33 | 26 |  |  |  |  |
| EK2QPI144 |  | 02Q OP's & Serv. Model Comment Resolution Approval | 1d | 2006-06-23 A | 2006-06-26 A | EM02QPI136 | 100% | 2006-06-26 | 2006-06-26 | EBWK 5 Day MEC Holidays | 2006-07-29 | 0 | 0 | 02 | EK | P20 | 02Q | PI |  |  | P |  | E |  |  |  |  |  |  |  | P12 | E4B4 | 130 | 02Q | PI130 | 41 | 35 |  |  |  |  |

| ID | WBS | Activity | Duration | Start | Finish | Predecessors | Complete | Planned start | Planned finish | Constraint | Calendar | zData Date | Sequence | PCA Criticality Index | PCA Duration Sensitivity | User Defined Field 1 | User Definer Field 2 | EB02 - UNIT | EB01 - RESP | EB06 - WORK OP | EB03 - AREA | EB05 - DISCIPLINE | EB10 - KEY | EB04 - CLASS | EB00 - EPC | EB15 - Civil / U/G Path of Construction | EB16 - Piping Path of Construction | EB17 - Suffix | Optimistic Duration | Most Likely Duration | Pessimistic Duration | EB07 - REQN | EB08 - TAG | EB11 - FLAG |
| --- | --- | --- | --- | --- | --- | --- | --- | --- | --- | --- | --- | --- | --- | --- | --- | --- | --- | --- | --- | --- | --- | --- | --- | --- | --- | --- | --- | --- | --- | --- | --- | --- | --- | --- |
| EK02YPI144 |  | 02Y OP's & Serv. Model Comments Resolution Approval | 2d | 2006-06-28 A | 2006-07-13 A | EM02YPI136 | 100% | 2006-06-27 | 2006-06-28 |  | EBWK 5 Day MEC Holidays | 2006-07-29 | 134 | 0 | 0 | 01A | PI134 | 02 | EK | P20 | 02Y | PI | P12 | P | E | 30 | 27 | E5B5 |  |  |  |  |  |  |
| EK02API144 |  | 02A OP's & Serv. Model Comment Resolution Approval | 5d | 2006-07-05 A | 2006-07-20 A | EM02API136 | 100% | 2006-07-05 | 2006-07-11 |  | EBWK 5 Day MEC Holidays | 2006-07-29 | 130 | 0 | 0 | 02A | PI130 | 02 | EK | P20 | 02A | PI | P12 | P | E | 36 | 25 | E4B4 |  |  |  |  |  |  |
| EK02JPI144 |  | 02J OP's & Serv. Model Comments Resolution Approval | 2d | 2006-07-07 A | 2006-07-21 A | EM02JPI136 | 100% | 2006-07-07 | 2006-07-10 |  | EBWK 5 Day MEC Holidays | 2006-07-29 | 134 | 0 | 0 | 01A | PI134 | 02 | EK | P20 | 02J | PI | P12 | P | E | 30 | 27 | E5B5 |  |  |  |  |  |  |
| EK02MPI143 |  | 02M OP's & Serv. Model Comment Resolution Approval | 5d | 2006-07-11 A | 2006-08-21 A | EM02MPI136 | 100% | 2006-07-11 | 2006-07-17 |  | EBWK 5 Day MEC Holidays | 2006-07-29 | 130 | 0 | 0 | 02M | PI130 | 02 | EK | P20 | 02M | PI | P12 | P | E | 24 | 28 | E4B4 |  |  |  |  |  |  |
| EK02FPI143 |  | 02F OP's & Serv. Model Comment Resolution Approval | 5d | 2006-07-17 A | 2006-09-07 A | EM02FPI136 | 100% | 2006-07-17 | 2006-07-21 |  | EBWK 5 Day MEC Holidays | 2006-07-29 | 130 | 0 | 0 | 02F | PI130 | 02 | EK | P20 | 02F | PI | P12 | P | E | 29 | 16 | E4B4 |  |  |  |  |  |  |
| EK02EPI143 |  | 02E OP's & Serv. Model Comment Resolution Approval | 5d | 2006-07-18 A | 2006-07-26 A | EM02EPI136 | 100% | 2006-07-18 | 2006-07-24 |  | EBWK 5 Day MEC Holidays | 2006-07-29 | 132 | 0 | 0 | 01A | PI132 | 02 | EK | P20 | 02E | PI | P12 | P | E | 32 | 15 | E4B4 |  |  |  |  |  |  |
| EK02LPI143 |  | 02L OP's & Serv. Model Comment Resolution Approval | 5d | 2006-07-28 A | 2006-07-31 A | EM02LPI136 | 100% | 2006-07-31 | 2006-08-04 |  | EBWK 5 Day MEC Holidays | 2006-07-29 | 132 | 0.9 | 0 | 01A | PI132 | 02 | EK | P20 | 02L | PI | P12 | P | E | 23 | 19 | E4B4 | 4 | 5 | 6 |  |  |  |
| EK02GPI050 |  | 02G Model Comment Resolution Approval | 3d | 2006-08-08 A | 2006-08-10 A | EM02GPI133 | 100% | 2006-08-11 | 2006-08-15 |  |  | 2006-07-29 | 050 | 4.6 | 0.6 | 02G | PI050 | 02 | EK | P50 | 02G | PI | P06 | P | E | 9 | 22 | E1B1 | 2 | 3 | 5 |  |  |  |
| EK02KPI143 |  | 02K OP's & Serv. Model Comment Resolution Approval | 5d | 2006-08-29 A | 2006-09-25 A | EM02KPI136 FF | 100% | 2006-08-29 | 2006-09-04 |  | EBWK 5 Day MEC Holidays | 2006-07-29 | 134 | 0 | 0 | 02K | PI134 | 02 | EK | P20 | 02K | PI | P12 | P | E | 19 | 17 | E4B4 |  |  |  |  |  |  |
| EK02HPI144 |  | 02H OP's & Serv. Model Comments Resolution Approval | 2d | 2006-09-07 A | 2006-09-28 A | EM02HPI136 FF | 100% | 2006-09-07 | 2006-09-08 |  | EBWK 5 Day MEC Holidays | 2006-07-29 | 134 | 0 | 0 | 01A | PI134 | 02 | EK | P20 | 02H | PI | P12 | P | E | 30 | 27 | E5B5 |  |  |  |  |  |  |
| EK02CPI144 |  | 02C OP's & Serv. Model Comments Resolution Approval | 2d | 2006-09-25 A | 2006-09-29 A | EM02CPI136 FF | 100% | 2006-09-25 | 2006-09-26 |  | EBWK 5 Day MEC Holidays | 2006-07-29 | 134 | 0 | 0 | 01A | PI134 | 02 | EK | P20 | 02C | PI | P12 | P | E | 30 | 27 | E5B5 |  |  |  |  |  |  |
| EK02GPI144 |  | 02G OP's & Serv. Model Comments Resolution Approval | 5d | 2006-12-11 A | 2006-12-20 A | EM02GPI136 FF | 100% | 2006-12-11 | 2006-12-18 | start on or after 2006-11-27 | EBWK 5 Day MEC Holidays | 2006-07-29 | 134 | 9.8 | 0 | 01A | PI134 | 02 | EK | P20 | 02G | PI | P12 | P | E | 30 | 27 | E5B5 | 4 | 5 | 6 |  |  |  |
|  | PR | **Process Engineering** |  | 2005-04-15 | 2005-04-19 |  |  |  |  |  |  |  |  |  |  |  |  |  |  |  |  |  |  |  |  |  |  |  |  |  |  |  |  |  |
| EK000MB81A |  | Develop & Issue Load Sheet for 102-B | 3d | 2005-04-15 A | 2005-04-19 A | EK000YA002 SS | 100% |  |  |  |  | 2006-07-29 |  | 0 | 0 |  |  | 02 | EK | R10 | 02M | PR | CE | M | E | 24 | 28 | E1B1 |  |  |  | MB810 | 102B | Y |
|  | SE | **Safety Engineering** |  | 2005-05-06 | 2006-09-27 |  |  |  |  |  |  |  |  |  |  |  |  |  |  |  |  |  |  |  |  |  |  |  |  |  |  |  |  |  |
| EK000FP030 |  | FP ISBL Firewater P&IDs - Development & Issue ICA | 53d | 2005-05-06 A | 2005-07-19 A | EK020SY040 FF | 100% | 2005-05-06 | 2005-07-22 |  |  | 2006-07-29 |  | 0 | 0 |  |  | 02 | EK | YP0 | 020 | FP |  | Y | E |  |  | E1B1 |  |  |  |  |  | X |
| EK020FP480 |  | FP ISBL Fire Protection Eqmt. Location Plans - ICA | 10d | 2005-06-03 A | 2005-07-29 A | EK020PI010 | 100% | 2005-06-27 | 2005-07-12 |  |  | 2006-07-29 |  | 0 | 0 |  |  | 02 | EK | ZF1 | 020 | FP |  | Z | E |  |  |  |  |  |  |  |  | X |
| EK000FP005 |  | FP Electrical Area Classification ISBL - ICA | 10d | 2005-06-27 A | 2005-07-28 A | EK020PI010 | 100% | 2005-06-27 | 2005-07-12 |  |  | 2006-07-29 |  | 0 | 0 |  |  | 02 | EK | ZE0 | 020 | FP |  | Z | E |  |  |  |  |  |  |  |  | X |
| EK000FP032 |  | FP ISBL Firewater P&IDs - Development & Issue IPL | 51d | 2005-07-20 A | 2005-11-07 A | EK000FP030 FF, EK020SY080 FF, EK020SY060 FF, EK020SY070 FF | 100% | 2005-08-01 | 2005-10-10 |  |  | 2006-07-29 |  | 0 | 0 |  |  | 02 | EK | YP0 | 020 | FP |  | Y | E |  |  | E1B1 |  |  |  |  |  | X |
| EK000FP036 |  | FP ISBL Firewater P&IDs - Development & Issue IFC | 103d | 2005-10-17 A | 2006-09-27 A | EK000FP034 FF, EM01ASY272 FF | 100% | 2005-10-17 | 2006-03-10 |  |  | 2006-07-29 |  | 0 | 0 |  |  | 02 | EK | YP0 | 020 | FP |  | Y | E |  |  | E1B1 |  |  |  |  |  | X |
| EK020FP410 |  | FP Electrical Area Classification ISBL - IPL | 10d | 2005-11-01 A | 2005-11-10 A | EK000FP005, EK020PI012 | 100% | 2005-11-01 | 2005-11-14 |  |  | 2006-07-29 |  | 0 | 0 |  |  | 02 | EK | ZE0 | 020 | FP |  | Z | E |  |  |  |  |  |  |  |  | X |
| EK020FP500 |  | FP ISBL Fire Protection Eqmt. Location Plans - IPL | 10d | 2005-11-01 A | 2005-12-01 A | EK020FP480, EK020PI012 | 100% | 2005-11-01 | 2005-11-14 |  |  | 2006-07-29 |  | 0 | 0 |  |  | 02 | EK | ZF1 | 020 | FP |  | Z | E |  |  |  |  |  |  |  |  | X |
| EK020FP450 |  | FP Electrical Area Classification ISBL - IFC | 10d | 2006-05-01 A | 2006-05-23 A | EK020PI014, EK020PI013, EK020FP410 | 100% | 2006-05-23 | 2006-06-05 |  |  | 2006-07-29 |  | 0 | 0 |  |  | 02 | EK | ZE0 | 020 | FP |  | Z | E |  |  |  |  |  |  |  |  | X |
| EK000FP034 |  | FP ISBL Firewater P&IDs - Development & Issue IFD | 65d | 2006-06-01 A | 2006-06-26 A | EK000FP032, EK020SY070 FF, EM02NPI132 FF+5d, EM02MPI132 FF+5d, EM02QPI132 FF+5d, EM02PPI132 FF+5d, EM02MSY172 FF, EM02NSY172 FF, EM02PSY172 FF, EM02QSY172 FF, EM02ASY172 FF | 100% | 2006-06-26 | 2006-09-22 |  |  | 2006-07-29 |  | 0 | 0 |  |  | 02 | EK | YP0 | 020 | FP |  | Y | E |  |  | E1B1 |  |  |  |  |  | X |

| ID | WBS | Activity | Type | Duration | Start | Finish | Predecessors | Complete | Planned start | Planned finish | zData Date | PCA Criticality Index | PCA Duration Sensitivity | EB02 - UNIT | EB01 - RESP | EB06 - WORK OP | EB03 - AREA | EB05 - DISCIPLINE | EB04 - CLASS | EB11 - FLAG | EB00 - EPC | EB17 - Suffix | EB10 - KEY | EB18 - Grouping | EB07 - REQN | EB09 - IPMS | Sequence | User Defined Field 1 | User Definer Field 2 | EB15 - Civil / U/G Path of Construction | EB16 - Piping Path of Construction |
| --- | --- | --- | --- | --- | --- | --- | --- | --- | --- | --- | --- | --- | --- | --- | --- | --- | --- | --- | --- | --- | --- | --- | --- | --- | --- | --- | --- | --- | --- | --- | --- |
|  | SY | **Systems Engineering** |  |  | 2005-03-16 | 2006-01-24 |  |  |  |  |  |  |  |  |  |  |  |  |  |  |  |  |  |  |  |  |  |  |  |  |  |
| EK000SY020 |  | 020 ISBL Hydraulic Calculations |  | 46d | 2005-03-16 A | 2005-06-17 A | EK000PR020 SS+10d, EK000PR030 | 100% | 2005-03-16 | 2005-05-18 | 2006-07-29 | 0 | 0 | 02 | EK | Y70 | 020 | SY | Y | X | E | E1B1 |  |  |  |  |  |  |  |  |  |
| EK020SY020 |  | 020 ISBL P&ID development IDR & Line List Issue |  | 25d | 2005-03-21 A | 2005-04-22 A | EK000PR035, EK000SY010 | 100% |  |  | 2006-07-29 | 0 | 0 | 02 | EK | YP0 | 020 | SY | Y | X | E | E1B1 | Y0 |  |  |  |  |  |  |  |  |
| EK020SY030 |  | 020 ISBL P&ID IDR Meeting milestone |  | 2d | 2005-05-03 A | 2005-05-05 A | EK020SY020 FS+3d | 100% | 2005-05-03 | 2005-05-04 | 2006-07-29 | 0 | 0 | 02 | EK | YP0 | 020 | SY | Y | X | E | E1B1 | Y0 |  |  |  |  |  |  |  |  |
| EK020SY040 |  | 020 ISBL P&IDs - ICA & Line List Issue development |  | 20d | 2005-05-06 A | 2005-06-20 A | EK000SY020 FF, EK020SY030 | 100% | 2005-05-06 | 2005-06-03 | 2006-07-29 | 0 | 0 | 02 | EK | YP0 | 020 | SY | Y | X | E | E1B1 | Y1 |  |  |  |  |  |  |  |  |
| EK020SY050 |  | 020 ISBL P&IDs - ICA & Line List Issue Milestone | milestone | 0d | 2005-06-20 A | 2005-06-20 A | EK020SY040 | 100% |  |  | 2006-07-29 | 0 | 0 | 02 | EK | YP0 | 020 | SY | Y | X | E | E1B1 | Y1 |  |  |  |  |  |  |  |  |
| EK000SY126 |  | 020 ISBL CV & FE Process Data (Copy Areas) |  | 20d | 2005-07-06 A | 2005-09-23 A | EK000PR030, EK020SY030 FS+2d, EK020SY050 FS+9d | 100% | 2005-07-06 | 2005-08-02 | 2006-07-29 | 0 | 0 | 02 | EK | Y50 | 020 | SY | Y | X | E | E1B1 |  | Copy |  |  |  |  |  |  |  |
| EK000SY127 |  | 020 ISBL CV & FE Process Data (Almost Copy) |  | 16d | 2005-07-19 A | 2005-09-23 A | EK000PR030, EK020SY030, EK020SY050 FS+9d, EK000SY126 SS+9d | 100% | 2005-07-19 | 2005-08-09 | 2006-07-29 | 0 | 0 | 02 | EK | Y50 | 020 | SY | Y | X | E | E1B1 |  | A Copy |  |  |  |  |  |  |  |
| EK000SY125 |  | 020 ISBL CV & FE Process Data (New Areas) |  | 24d | 2005-07-25 A | 2005-09-23 A | EK000PR030, EK020SY030, EK020SY050 FS+9d, EK000SY126 FF+18d, EK000SY127 SS+10d | 100% | 2005-08-03 | 2005-09-05 | 2006-07-29 | 0 | 0 | 02 | EK | Y50 | 020 | SY | Y | X | E | E1B1 |  | NEW |  |  |  |  |  |  |  |
| EK020SY060 |  | 020 ISBL P&ID's - IPL & Line List Issue (Copy Areas) |  | 40d | 2005-07-27 A | 2005-11-04 A | EK000SY126 FF+10d, EK020SY050 | 100% | 2005-07-27 | 2005-09-20 | 2006-07-29 | 0 | 0 | 02 | EK | YP0 | 020 | SY | Y | X | E | E1B1 | Y2 | Copy |  |  |  |  |  |  |  |
| EK020SY070 |  | 020 ISBL P&ID's - IPL & Line List Issue(Almost Copy) |  | 50d | 2005-07-27 A | 2005-11-04 A | EK000SY127 FF+10d, EK020SY050, EK020SY147 FF+5d | 100% | 2005-07-27 | 2005-10-04 | 2006-07-29 | 0 | 0 | 02 | EK | YP0 | 020 | SY | Y | X | E | E1B1 | Y2 | A Copy |  |  |  |  |  |  |  |
| EK020SY146 |  | 020 Relief Valve Calculations - ISBL (Copy Areas) |  | 15d | 2005-08-15 A | 2005-10-28 A | EK000PR030, EK020SY050 FS+1d, EK000SY126 FF+10d | 100% | 2005-08-04 | 2005-08-24 | 2006-07-29 | 0 | 0 | 02 | EK | Y60 | 020 | SY | Y | X | E | E1B1 |  | Copy | PSA08 |  |  |  |  |  |  |
| EK020SY147 |  | 020 Relief Valve Calculations - ISBL (Almost Copy) |  | 15d | 2005-08-15 A | 2005-10-28 A | EK000PR030, EK020SY050 FS+1d, EK000SY127 FF+2d | 100% | 2005-08-03 | 2005-08-23 | 2006-07-29 | 0 | 0 | 02 | EK | Y60 | 020 | SY | Y | X | E | E1B1 |  | A Copy | PSA08 |  |  |  |  |  |  |
| EK020SY145 |  | 020 Relief Valve Calculations - ISBL (New Areas) |  | 15d | 2005-09-23 A | 2005-10-28 A | EK000PR030, EK020SY050 FS+1d, EK000SY125 FF+10d | 100% | 2005-09-23 | 2005-10-13 | 2006-07-29 | 0 | 0 | 02 | EK | Y60 | 020 | SY | Y | X | E | E1B1 |  | NEW | PSA08 |  |  |  |  |  |  |
| EK020SY195 |  | 020 Issue Requisition -PSA08 Relief Valves (New Areas) |  | 10d | 2005-10-04 A | 2005-12-20 A | EK020SY145 | 100% | 2005-10-31 | 2005-11-11 | 2006-07-29 | 0 | 0 | 02 | EK | Y60 | 020 | SY | Y |  | E | E1B1 | IR | NEW | PSA08 | A |  |  |  |  |  |
| EK020SY080 |  | 020 ISBL P&ID's - IPL & Line List Issue (New Areas) |  | 39d | 2005-10-17 A | 2005-11-04 A | EK000SY125 FF+10d, EK020SY050, EK020SY145 FF+5d | 100% | 2005-10-17 | 2005-12-08 | 2006-07-29 | 0 | 0 | 02 | EK | YP0 | 020 | SY | Y | X | E | E1B1 | Y2 | NEW |  |  |  |  |  |  |  |
| EK020SY156 |  | 020 SP Item Data Sheets - ISBL |  | 22d | 2005-10-20 A | 2006-01-24 A | EK020SY050, EK020SY146 FF+5d | 100% | 2005-10-10 | 2005-11-08 | 2006-07-29 | 0 | 0 | 02 | EK | Y90 | 020 | SY | Y |  | E | E1B1 |  | Copy | PS000 |  |  |  |  |  |  |
| EK000SY100 |  | 020 ISBL P&ID's - Tech Review |  | 5d | 2005-11-04 A | 2005-11-04 A | EK020SY060 FS+10d, EK020SY070 FS+10d, EK020SY080 FS+10d | 100% | 2005-12-05 | 2005-12-09 | 2006-07-29 | 0 | 0 | 02 | EK | YP0 | 020 | SY | Y | X | E |  |  |  |  |  |  |  |  |  |  |
| EK020SY196 |  | 020 Issue Requisition - PSA08 Relief Valves (Copy Areas) |  | 10d | 2005-11-04 A | 2005-12-20 A | EK020SY146 | 100% | 2005-11-04 | 2005-11-18 | 2006-07-29 | 0 | 0 | 02 | EK | Y60 | 020 | SY | Y |  | E | E1B1 | IR | Copy | PSA08 | A |  |  |  |  |  |
| EK020SY197 |  | 020 Issue Requisition - PSA08 Relief Valves (Almost Copy) |  | 10d | 2005-11-04 A | 2005-12-20 A | EK020SY147 | 100% | 2005-11-04 | 2005-11-18 | 2006-07-29 | 0 | 0 | 02 | EK | Y60 | 020 | SY | Y |  | E | E1B1 | IR | A Copy | PSA08 | A |  |  |  |  |  |
| EK020SY090 |  | 020 ISBL P&IDs IPL & Line List Issue Milestone | milestone | 0d | 2005-11-07 A | 2005-11-07 A | EK020SY080 FF, EK020SY070 FF, EK020SY060 FF | 100% | 2005-11-18 | 2005-11-18 | 2006-07-29 | 0 | 0 | 02 | EK | YP0 | 020 | SY | Y | X | E | E1B1 | Y2 |  |  |  | 170 | 020 | SY170 |  |  |
| EK02ASY170 |  | 02A ISBL P&IDs IPL & Line List Issue Milestone | milestone | 0d | 2005-11-07 A | 2005-11-07 A | EK020SY060 FF | 100% | 2005-11-11 | 2005-11-11 | 2006-07-29 | 0 | 0 | 02 | EK | YP0 | 02A | SY | Y |  | E | E1B1 | Y2 |  |  |  | 170 | 02A | SY170 | 36 | 25 |
| EK02BSY170 |  | 02B ISBL P&IDs IPL & Line List Issue Milestone | milestone | 0d | 2005-11-07 A | 2005-11-07 A | EK020SY060 FF | 100% | 2005-11-11 | 2005-11-11 | 2006-07-29 | 0 | 0 | 02 | EK | YP0 | 02B | SY | Y |  | E | E1B1 | Y2 |  |  |  | 170 | 02B | SY170 | 34 | 34 |
| EK02CSY170 |  | 02C ISBL P&IDs IPL & Line List Issue Milestone | milestone | 0d | 2005-11-07 A | 2005-11-07 A | EK020SY080 FF | 100% | 2005-11-18 | 2005-11-18 | 2006-07-29 | 0 | 0 | 02 | EK | YP0 | 02C | SY | Y |  | E | E1B1 | Y2 |  |  |  | 170 | 02C | SY170 | 14 | 21 |
| EK02DSY170 |  | 02D ISBL P&IDs IPL & Line List Issue Milestone | milestone | 0d | 2005-11-07 A | 2005-11-07 A | EK020SY080 FF | 100% | 2005-11-18 | 2005-11-18 | 2006-07-29 | 0 | 0 | 02 | EK | YP0 | 02D | SY | Y |  | E | E1B1 | Y2 |  |  |  | 170 | 02D | SY170 | 33 | 26 |
| EK02ESY170 |  | 02E ISBL P&IDs IPL & Line List Issue Milestone | milestone | 0d | 2005-11-07 A | 2005-11-07 A | EK020SY060 FF | 100% | 2005-11-11 | 2005-11-11 | 2006-07-29 | 0 | 0 | 02 | EK | YP0 | 02E | SY | Y |  | E | E1B1 | Y2 |  |  |  | 170 | 02E | SY170 | 32 | 15 |
| EK02FSY170 |  | 02F ISBL P&IDs IPL & Line List Issue Milestone | milestone | 0d | 2005-11-07 A | 2005-11-07 A | EK020SY080 FF | 100% | 2005-11-18 | 2005-11-18 | 2006-07-29 | 0 | 0 | 02 | EK | YP0 | 02F | SY | Y |  | E | E1B1 | Y2 |  |  |  | 170 | 02F | SY170 | 29 | 16 |
| EK02GSY170 |  | 02G ISBL P&IDs IPL & Line List Issue Milestone | milestone | 0d | 2005-11-07 A | 2005-11-07 A | EK020SY080 FF | 100% | 2005-11-18 | 2005-11-18 | 2006-07-29 | 0 | 0 | 02 | EK | YP0 | 02G | SY | Y |  | E | E1B1 | Y2 |  |  |  | 170 | 02G | SY170 | 9 | 22 |
| EK02HSY170 |  | 02H ISBL P&IDs IPL & Line List Issue Milestone | milestone | 0d | 2005-11-07 A | 2005-11-07 A | EK020SY060 FF | 100% | 2005-11-11 | 2005-11-11 | 2006-07-29 | 0 | 0 | 02 | EK | YP0 | 02H | SY | Y |  | E | E1B1 | Y2 |  |  |  | 170 | 02H | SY170 | 11 | 20 |
| EK02JSY170 |  | 02J ISBL P&IDs IPL & Line List Issue Milestone | milestone | 0d | 2005-11-07 A | 2005-11-07 A | EK020SY060 FF | 100% | 2005-11-11 | 2005-11-11 | 2006-07-29 | 0 | 0 | 02 | EK | YP0 | 02J | SY | Y |  | E | E1B1 | Y2 |  |  |  | 170 | 02J | SY170 | 18 | 30 |
| EK02KSY170 |  | 02K ISBL P&IDs IPL & Line List Issue Milestone | milestone | 0d | 2005-11-07 A | 2005-11-07 A | EK020SY060 FF | 100% | 2005-11-11 | 2005-11-11 | 2006-07-29 | 0 | 0 | 02 | EK | YP0 | 02K | SY | Y |  | E | E1B1 | Y2 |  |  |  | 170 | 02K | SY170 | 19 | 17 |
| EK02LSY170 |  | 02L ISBL P&IDs IPL & Line List Issue Milestone | milestone | 0d | 2005-11-07 A | 2005-11-07 A | EK020SY080 FF, EK000SY100 | 100% | 2005-11-18 | 2005-11-18 | 2006-07-29 | 0 | 0 | 02 | EK | YP0 | 02L | SY | Y |  | E | E1B1 | Y2 |  |  |  | 170 |  |  | 23 | 19 |
| EK02MSY170 |  | 02M ISBL P&IDs IPL & Line List Issue Milestone | milestone | 0d | 2005-11-07 A | 2005-11-07 A | EK020SY070 FF | 100% | 2005-11-18 | 2005-11-18 | 2006-07-29 | 0 | 0 | 02 | EK | YP0 | 02M | SY | Y |  | E | E1B1 | Y2 |  |  |  | 170 | 02M | SY170 | 24 | 28 |
| EK02NSY170 |  | 02N ISBL P&IDs IPL & Line List Issue Milestone | milestone | 0d | 2005-11-07 A | 2005-11-07 A | EK020SY070 FF | 100% | 2005-11-18 | 2005-11-18 | 2006-07-29 | 0 | 0 | 02 | EK | YP0 | 02N | SY | Y |  | E | E1B1 | Y2 |  |  |  | 170 | 02N | SY170 | 39 | 37 |
| EK02PSY170 |  | 02P ISBL P&IDs IPL & Line List Issue Milestone | milestone | 0d | 2005-11-07 A | 2005-11-07 A | EK020SY070 FF | 100% | 2005-11-18 | 2005-11-18 | 2006-07-29 | 0 | 0 | 02 | EK | YP0 | 02P | SY | Y |  | E | E1B1 | Y2 |  |  |  | 170 | 02P | SY170 | 40 | 36 |
| EK02QSY170 |  | 02Q ISBL P&IDs IPL & Line List Issue Milestone | milestone | 0d | 2005-11-07 A | 2005-11-07 A | EK020SY070 FF | 100% | 2005-11-18 | 2005-11-18 | 2006-07-29 | 0 | 0 | 02 | EK | YP0 | 02Q | SY | Y |  | E | E1B1 | Y2 |  |  |  | 170 | 02Q | SY170 | 41 | 35 |
| EK02YSY170 |  | 02Y ISBL P&IDs IPL & Line List Issue Milestone | milestone | 0d | 2005-11-07 A | 2005-11-07 A | EK020SY080 FF | 100% | 2005-11-18 | 2005-11-18 | 2006-07-29 | 0 | 0 | 02 | EK | YP0 | 02Y | SY | Y |  | E | E1B1 | Y2 |  |  |  | 170 | 02Y | SY170 | 8 | 9 |

Notes:
- EK020SY020: P3 Activity Log Info: Major Process Line Sizing, Pipe Specs, Control Scheme, / Block valve schemes Critical Lines Hydraulics complete approximatly 50 P&IDs / Basis
- EK020SY060: P3 Activity Log Info: 02K, 02J, 02E, 02A, 02B, / 02H / basis of schedule: BASIS = 16 / P&ID's
- EK020SY070: basis of schedule: BASIS = 7 P&ID's / P3 Activity Log Info: 02N, 02P, 02Q, / 02M
- EK020SY080: P3 Activity Log Info: 02L, 02C,02D,02F,02G,02Y / basis of schedule: BASIS = 30 P&ID's

| ID | WBS | Activity | Type | Duration | Start | Finish | Predecessors | Complete | Planned start | Planned finish | Total float | Free float | Constraint | Calendar | zData Date | PCA Criticality Index | PCA Duration Sensitivity | EB02 - UNIT | EB01 - RESP | EB06 - WORK OP | EB03 - AREA | EB05 - DISCIPLINE | EB07 - REQN | EB10 - KEY | EB04 - CLASS | EB11 - FLAG | EB09 - IPMS | EB00 - EPC | EB18 - Grouping | EB08 - TAG | Vendor | Ship From | Weighting | EB21 - Rev 2 Risk Associations | user_integer2 |
| --- | --- | --- | --- | --- | --- | --- | --- | --- | --- | --- | --- | --- | --- | --- | --- | --- | --- | --- | --- | --- | --- | --- | --- | --- | --- | --- | --- | --- | --- | --- | --- | --- | --- | --- | --- |
|  | P | **Procurement (HOC)** |  |  | 2006-08-16 | 2008-02-11 |  |  |  |  |  |  |  |  |  |  |  |  |  |  |  |  |  |  |  |  |  |  |  |  |  |  |  |  |  |
|  | 02 | **Ammonia Plant** |  |  | 2006-08-16 | 2008-02-11 |  |  |  |  |  |  |  |  |  |  |  |  |  |  |  |  |  |  |  |  |  |  |  |  |  |  |  |  |  |
| PK000I1222 |  | Coriolis Meters - Recv on Site | milestone | 0d | 2006-08-16 A | 2006-08-16 A | PK000I1221 FF, CK000YA306, CK000YA306 FF | 100% | 2007-03-26 | 2007-03-26 |  |  |  | EBWK 6 Day Egypt Holidays | 2006-07-29 | 0 | 0 | 02 | PK | I21 | 020 | PK | I2122 | IR | I | N | L | P | Copy |  |  |  |  |  |  |
| PK000MD44Q |  | 02D Recv. at Site - 107-F Ammonia Letdown Drum | milestone | 0d | 2006-09-16 A | 2006-09-16 A | PK000MD44O, CK000YA306, PK000MD44N | 100% | 2006-09-21 | 2006-09-21 |  |  |  | EBWK 6 Day Egypt Holidays | 2006-07-29 | 0 | 0 | 02 | PK | MD4 | 02D | PK | MD404 | NE | M |  | L | P |  | 107F | JW | HOU |  |  |  |
| PK02AMC61Z |  | 02A Recv. at Site - 161-C Aqua Ammonia Interchanger | milestone | 0d | 2006-09-16 A | 2006-09-16 A | CK000YA306, PK000MC61Q | 100% | 2006-09-21 | 2006-09-21 |  |  |  | EBWK 6 Day Egypt Holidays | 2006-07-29 | 0 | 0 | 02 | PK | MC6 | 02A | PK | MC610 | PE | M |  | L | P |  | 161C | A | HOU |  |  |  |
| PK02AMD22Z |  | 02A Recv. at Site - 103-E, 105-E Towers | milestone | 0d | 2006-09-16 A | 2006-09-16 A | PK000MD22O, CK000YA306, PK000MD22C | 100% | 2006-09-21 | 2006-09-21 |  |  |  | EBWK 6 Day Egypt Holidays | 2006-07-29 | 0 | 0 | 02 | PK | MD2 | 02A | PK | MD202 | FE | M |  | L | P |  | 103E | JW | HOU |  |  |  |
| PK02CMJ75Z |  | 02C Recv. at Site - 103-JTC Surface Condenser | milestone | 0d | 2006-09-16 A | 2006-09-16 A | PK000MJ75O SF, CK000YA306 | 100% | 2006-11-28 | 2006-11-28 |  |  |  | EBWK 6 Day Egypt Holidays | 2006-07-29 | 0 | 0 | 02 | PK | MJ7 | 02C | PK | MJ750 | PE | M |  | L | P |  | 103JTC | G | NY |  |  |  |
| PK02DMC21Z |  | 02D Recv. at Site - 127-C Refrigerant Condenser | milestone | 0d | 2006-09-16 A | 2006-09-16 A | CK000YA306, PK000MC21T | 100% | 2006-09-21 | 2006-09-21 |  |  |  | EBWK 6 Day Egypt Holidays | 2006-07-29 | 0 | 0 | 02 | PK | MC2 | 02D | PK | MC210 | PE | M |  | L | P |  | 127C | ST | HOU |  |  |  |
| PK02DMD44Z |  | 02D Recv. at Site - 109-F Refrigerant Receiver | milestone | 0d | 2006-09-16 A | 2006-09-16 A | PK000MD44O, CK000YA306, PK000MD44N | 100% | 2006-09-21 | 2006-09-21 |  |  |  | EBWK 6 Day Egypt Holidays | 2006-07-29 | 0 | 0 | 02 | PK | MD4 | 02D | PK | MD404 | NE | M |  | L | P |  | 109F | JW | HOU |  |  |  |
| PK02EMD42Z |  | 02E Recv. at Site - 104-F Syn Gas Compr Suction Drum | milestone | 0d | 2006-09-16 A | 2006-09-16 A | CK000YA306, PK000MD42R | 100% | 2006-09-21 | 2006-09-21 |  |  |  | EBWK 6 Day Egypt Holidays | 2006-07-29 | 0 | 0 | 02 | PK | MD4 | 02E | PK | MD402 | CE | M |  | L | P |  | 104F | JW | HOU |  |  |  |
| PK02EMD45Z |  | 02E Recv. at Site - 157-F Mole Sieve Regen HP Cond Drum | milestone | 0d | 2006-09-16 A | 2006-09-16 A | PK000MD45O, CK000YA306 | 100% | 2006-09-21 | 2006-09-21 |  |  |  | EBWK 6 Day Egypt Holidays | 2006-07-29 | 0 | 0 | 02 | PK | MD4 | 02E | PK | MD405 | CE | M |  | L | P |  | 157F | JW | HOU |  |  |  |
| PK02GMJ75Z |  | 02G Recv. at Site - 101-JTC Surface Condenser | milestone | 0d | 2006-09-16 A | 2006-09-16 A | PK000MJ75O, CK000YA306 | 100% | 2006-10-28 | 2006-10-28 |  |  |  | EBWK 6 Day Egypt Holidays | 2006-07-29 | 0 | 0 | 02 | PK | MJ7 | 02G | PK | MJ750 | PE | M |  | L | P |  | 101JTC | G | NY | 85346 |  |  |
| PK02HMB21Z |  | 02H Recv. at Site - 101-B Siding | milestone | 0d | 2006-09-16 A | 2006-09-16 A | PK000MB21O, CK000YA306 | 100% | 2006-09-21 | 2006-09-21 |  |  |  | EBWK 6 Day Egypt Holidays | 2006-07-29 | 0 | 0 | 02 | PK | MB2 | 02H | PK | MB212 | CE | M |  | L | P |  | 101B | C | HOU |  |  |  |
| PK02HMB63Z |  | 02H Recv. at Site - 101-B Air Preheater | milestone | 0d | 2006-09-16 A | 2006-09-16 A | PK000MB63O, CK000YA306 | 100% | 2006-09-21 | 2006-09-21 |  |  |  | EBWK 6 Day Egypt Holidays | 2006-07-29 | 0 | 0 | 02 | PK | MB6 | 02H | PK | MB630 | CE | M |  | L | P |  | 101BL1 | BD | GER |  |  |  |
| PK02HMB64Z |  | 02H Recv. at Site - 101-B Springs & Hangers | milestone | 0d | 2006-09-16 A | 2006-09-16 A | PK000MB64O, CK000YA306 | 100% | 2006-09-21 | 2006-09-21 |  |  |  | EBWK 6 Day Egypt Holidays | 2006-07-29 | 0 | 0 | 02 | PK | MB6 | 02H | PK | MB640 | CE | M |  | L | P |  | 101B | PI | HOU |  |  |  |
| PK02HMB65Z |  | 02H Recv. at Site - 101-B Penthouse Circ Fans | milestone | 0d | 2006-09-16 A | 2006-09-16 A | PK000MB65O, CK000YA306 | 100% | 2006-09-21 | 2006-09-21 |  |  |  | EBWK 6 Day Egypt Holidays | 2006-07-29 | 0 | 0 | 02 | PK | MB6 | 02H | PK | MB622 | CE | M |  | L | P |  | 101B | EL | HOU |  |  |  |
| PK02HMB68Z |  | 02H Recv. at Site - 101-B Cat Vacuum Equip | milestone | 0d | 2006-09-16 A | 2006-09-16 A | PK000MB68O, CK000YA306 | 100% | 2006-09-21 | 2006-09-21 |  |  |  | EBWK 6 Day Egypt Holidays | 2006-07-29 | 0 | 0 | 02 | PK | MB6 | 02H | PK | MB692 | CE | M |  | L | P |  | 101B | AC |  |  | 03 |  |
| PK02HMBP1K |  | 02H Recv. at Site - 101-B Radiant Steel Panels | milestone | 0d | 2006-09-16 A | 2006-09-16 A | PK000MBP1M, CK000YA306, CK000YA306 FF | 100% | 2007-01-06 | 2007-01-06 |  |  |  | EBWK 6 Day Egypt Holidays | 2006-07-29 | 0 | 0 | 02 | PK | MB2 | 02H | PK | MB221 | CE | M |  | L | P |  | 101B | B | HOU |  |  |  |
| PK02HMD45Z |  | 02H Recv. at Site - 156-F Steam Blowdown Drum | milestone | 0d | 2006-09-16 A | 2006-09-16 A | PK000MD45O, CK000YA306 | 100% | 2006-09-21 | 2006-09-21 |  |  |  | EBWK 6 Day Egypt Holidays | 2006-07-29 | 0 | 0 | 02 | PK | MD4 | 02H | PK | MD405 | CE | M |  | L | P |  | 156F | JW | HOU |  |  |  |
| PK02KMC61Z |  | 02K Recv. at Site - 188-CA/ CB/ CC Exchangers | milestone | 0d | 2006-09-16 A | 2006-09-16 A | PK000MC61O, CK000YA306 | 100% | 2006-09-21 | 2006-09-21 |  |  |  | EBWK 6 Day Egypt Holidays | 2006-07-29 | 0 | 0 | 02 | PK | MC6 | 02K | PK | MC610 | PE | M |  | L | P |  | 188CA | A | HOU |  |  |  |
| PK02KMD45A |  | 02K Recv. at Site - Equip. 115-F | milestone | 0d | 2006-09-16 A | 2006-09-16 A | CK000YA306, PK000MD45C | 100% | 2006-09-21 | 2006-09-21 |  |  |  | EBWK 6 Day Egypt Holidays | 2006-07-29 | 0 | 0 | 02 | PK | MD4 | 02K | PK | MD405 | CE | M |  | L | P |  | 115F | JW | HOU |  |  |  |
| PK02KMD45Z |  | 02K Recv. at Site - Equip. 118-F | milestone | 0d | 2006-09-16 A | 2006-09-16 A | CK000YA306, PK000MD45T | 100% | 2006-09-21 | 2006-09-21 |  |  |  | EBWK 6 Day Egypt Holidays | 2006-07-29 | 0 | 0 | 02 | PK | MD4 | 02K | PK | MD405 | CE | M |  | L | P |  | 118F | JW | HOU |  |  |  |
| PK02KML42Z |  | 02K Recv. at Site - 115-L Benfeild Sump Filter | milestone | 0d | 2006-09-16 A | 2006-09-16 A | PK000ML42O, CK000YA306, CK000YA306 FF | 100% | 2006-09-21 | 2006-09-21 |  |  |  | EBWK 6 Day Egypt Holidays | 2006-07-29 | 0 | 0 | 02 | PK | ML4 | 02K | PK | ML420 | NE | M |  | L | P |  | 115L | EG | HOU |  |  |  |
| PK02KML43Z |  | 02K Recv. at Site - 110-L Benfeild Mixer | milestone | 0d | 2006-09-16 A | 2006-09-16 A | PK000ML43O, CK000YA306, CK000YA306 FF | 100% | 2006-09-21 | 2006-09-21 |  |  |  | EBWK 6 Day Egypt Holidays | 2006-07-29 | 0 | 0 | 02 | PK | ML4 | 02K | PK | ML430 | NE | M |  | L | P |  | 110L | SH | SEAT |  |  |  |
| PK02LMC23A |  | 02L Recv. at Site - 106-C & 109-C Exchangers | milestone | 0d | 2006-09-16 A | 2006-09-16 A | PK000MC23C, CK000YA306 | 100% | 2006-09-21 | 2006-09-21 |  |  |  | EBWK 6 Day Egypt Holidays | 2006-07-29 | 0 | 0 | 02 | PK | MC2 | 02L | PK | MC230 | PE | M |  | L | P |  | 106C | ST | HOU |  |  |  |
| PK02LMD47Z |  | 02L Recv. at Site - 103-F CO2 Stripper Cond KO Drum | milestone | 0d | 2006-09-16 A | 2006-09-16 A | PK000MD47O, CK000YA306 | 100% | 2006-09-21 | 2006-09-21 |  |  |  | EBWK 6 Day Egypt Holidays | 2006-07-29 | 0 | 0 | 02 | PK | MD4 | 02L | PK | MD406 | CE | M |  | L | P |  | 103F | JW | HOU |  |  |  |
| PK02LML42Z |  | 02L Recv. at Site - 104-L Benfeild Solution Filter | milestone | 0d | 2006-09-16 A | 2006-09-16 A | PK000ML42O, CK000YA306, CK000YA306 FF | 100% | 2006-09-21 | 2006-09-21 |  |  |  | EBWK 6 Day Egypt Holidays | 2006-07-29 | 0 | 0 | 02 | PK | ML4 | 02L | PK | ML420 | NE | M |  | L | P |  | 104L | EG | HOU |  |  |  |
| PK02MMB81Z |  | 02M Recv. at Site - 102-B Startup Heater | milestone | 0d | 2006-09-16 A | 2006-09-16 A | PK000MB81O, CK000YA306, CK000YA306 FF | 100% | 2006-10-28 | 2006-10-28 |  |  |  | EBWK 6 Day Egypt Holidays | 2006-07-29 | 0 | 0 | 02 | PK | MB8 | 02M | PK | MB810 | CE | M |  | L | P |  | 102B | T | HOU | 93740 |  |  |
| PK02MMD42Z |  | 02M Recv. at Site - 144-F Feed Gas KO Drum | milestone | 0d | 2006-09-16 A | 2006-09-16 A | CK000YA306, PK000MD42B | 100% | 2006-09-21 | 2006-09-21 |  |  |  | EBWK 6 Day Egypt Holidays | 2006-07-29 | 0 | 0 | 02 | PK | MD4 | 02M | PK | MD402 | CE | M |  | L | P |  | 144F | JW | HOU |  |  |  |
| PK02PMU35Z |  | 02P Recv. at Site - 101-U Deaerator | milestone | 0d | 2006-09-16 A | 2006-09-16 A | PK000MU35O, CK000YA306, CK000YA306 FF | 100% | 2006-09-21 | 2006-09-21 |  |  |  | EBWK 6 Day Egypt Holidays | 2006-07-29 | 0 | 0 | 02 | PK | MU3 | 02P | PK | MU350 | FE | M |  | L | P |  | 101U | E | USA | 18819 |  |  |
| PK02HMB61Z |  | 02H Recv. at Site - 101-B Burners | milestone | 0d | 2006-09-16 A | 2006-09-16 A | PK000MB61O, CK000YA306, CK000YA306 FF | 100% | 2006-09-21 | 2006-09-21 |  |  |  | EBWK 6 Day Egypt Holidays | 2006-07-29 | 0 | 0 | 02 | PK | MB6 | 02H | PK | MB610 | CE | M |  | L | P |  | 101BA | CA | HOU |  |  |  |
| PK000I1163 |  | 020 Wedge Flow Meters - Recv on Site | milestone | 0d | 2006-10-13 A | 2006-10-13 A | PK000I1162 FF, CK000YA306, CK000YA306 FF | 100% | 2007-01-20 | 2007-01-20 |  |  |  | EBWK 6 Day Egypt Holidays | 2006-07-29 | 0 | 0 | 02 | PK | I21 | 020 | PK | I2116 | IR | I | N | L | P | Copy |  |  |  |  |  |  |
| PK02AMJ37Z |  | 02A Recv. at Site - 130-J/JA, 131-J/JA Metering Pumps | milestone | 0d | 2006-10-30 A | 2006-10-30 A | PK000MJ37O, CK000YA306 | 100% | 2006-10-31 | 2006-10-31 |  |  |  | EBWK 6 Day Egypt Holidays | 2006-07-29 | 0 | 0 | 02 | PK | MJ3 | 02A | PK | MJ340 | NE | M |  | L | P |  | 130J | BR | GER |  |  |  |
| PK02HMB42Z |  | 02H Recv. at Vendor - 101-B Cast Peep Sites | milestone | 0d | 2006-12-01 A | 2006-12-01 A | PK000MB42O, CK000YA306, CK000YA306 FF | 100% | 2007-02-10 | 2007-02-10 |  |  |  | EBWK 6 Day Egypt Holidays | 2006-07-29 | 0 | 0 | 02 | PK | MB4 | 02H | PK | MB420 | CE | M |  | L | P |  | 101B | MA | HOU |  |  |  |
| PK000I1105 |  | 020 Orific Plates - Recv on Site | milestone | 0d | 2006-12-07 A | 2006-12-07 A | PK000I1103 FF, CK000YA306, CK000YA306 FF | 100% | 2007-01-27 | 2007-01-27 |  |  |  | EBWK 6 Day Egypt Holidays | 2006-07-29 | 0 | 0 | 02 | PK | I21 | 020 | PK | I2110 | IR | I | N | L | P | Copy |  |  |  |  |  |  |
| PK000MB33Z |  | 02H Recv. at Site - 101-B Riser Transition | milestone | 0d | 2006-12-09 A | 2006-12-09 A | PK000MB33O, CK000YA306, CK000YA306 FF | 100% | 2007-02-24 | 2007-02-24 |  |  |  | EBWK 6 Day Egypt Holidays | 2006-07-29 | 0 | 0 | 02 | PK | MB3 | 02H | PK | MB333 | CE | M |  | L | P |  | 101B | P | HOU |  |  |  |
| PK02AMC21Z |  | 02A Recv. at Site - 160-C Ammonia Distl Column Reboiler | milestone | 0d | 2006-12-09 A | 2006-12-09 A | PK000MC21O, CK000YA306 | 100% | 2007-01-20 | 2007-01-20 |  |  |  | EBWK 6 Day Egypt Holidays | 2006-07-29 | 0 | 0 | 02 | PK | MC2 | 02A | PK | MC210 | PE | M |  | L | P |  | 160C | EEX | HOU |  |  |  |
| PK02AMD22D |  | 02A Recv. at Site - 104-E Tower | milestone | 0d | 2006-12-09 A | 2006-12-09 A | CK000YA306, PK000MD22C | 100% | 2007-01-20 | 2007-01-20 |  |  | finish on or after 2006-12-16 | EBWK 6 Day Egypt Holidays | 2006-07-29 | 0 | 0 | 02 | PK | MD2 | 02A | PK | MD202 | FE | M |  | L | P |  | 104E | JW | HOU |  |  |  |
| PK02CMC21Z |  | 02C Recv. at Site - 128-C, 134-C, 167-C Exchangers | milestone | 0d | 2006-12-09 A | 2006-12-09 A | PK000MC21O, CK000YA306 | 100% | 2007-01-20 | 2007-01-20 |  |  |  | EBWK 6 Day Egypt Holidays | 2006-07-29 | 0 | 0 | 02 | PK | MC2 | 02C | PK | MC210 | PE | M |  | L | P |  | 167C | EEX | HOU |  |  |  |
| PK02EMC21Z |  | 02E Recv. at Site - 115-C & 130-C Exchangers | milestone | 0d | 2006-12-09 A | 2006-12-09 A | PK000MC21O, CK000YA306 | 100% | 2007-01-20 | 2007-01-20 |  |  |  | EBWK 6 Day Egypt Holidays | 2006-07-29 | 0 | 0 | 02 | PK | MC2 | 02E | PK | MC210 | PE | M |  | L | P |  | 130C | EEX | HOU |  |  |  |
| PK02EMC23S |  | 02E Recv. at Site - 114-C Exchangers | milestone | 0d | 2006-12-09 A | 2006-12-09 A | PK000MC23T | 100% | 2007-01-20 | 2007-01-20 |  |  |  | EBWK 6 Day Egypt Holidays | 2006-07-29 | 0 | 0 | 02 | PK | MC2 | 02E | PK | MC230 | PE | M |  | L | P |  | 114C | EEX | HOU |  |  |  |
| PK02EMC23Z |  | 02E Recv. at Site - 172-C, 183-C Exchangers | milestone | 0d | 2006-12-09 A | 2006-12-09 A | PK000MC23O, CK000YA306 | 100% | 2007-01-20 | 2007-01-20 |  |  |  | EBWK 6 Day Egypt Holidays | 2006-07-29 | 0 | 0 | 02 | PK | MC2 | 02E | PK | MC230 | PE | M |  | L | P |  | 183C | ST | HOU |  |  |  |
| PK02GMC21Z |  | 02G Recv. at Site - 133-C Fd Gas Compr. Kickback Cooler | milestone | 0d | 2006-12-09 A | 2006-12-09 A | PK000MC21O, CK000YA306 | 100% | 2007-01-20 | 2007-01-20 |  |  |  | EBWK 6 Day Egypt Holidays | 2006-07-29 | 0 | 0 | 02 | PK | MC2 | 02G | PK | MC210 | PE | M |  | L | P |  | 133C | EEX | HOU |  |  |  |
| PK02HMB66Z |  | 02H Recv. at Site - 101-B Dampers & Air Doors | milestone | 0d | 2006-12-09 A | 2006-12-09 A | PK000MB66O, CK000YA306 | 100% | 2007-02-10 | 2007-02-10 |  |  |  | EBWK 6 Day Egypt Holidays | 2006-07-29 | 0 | 0 | 02 | PK | MB6 | 02H | PK | MB660 | CE | M |  | L | P |  | 101B | WA |  |  |  |  |
| PK02HMBP1Q |  | 02H Recv. at Site - 101-B Radiant Harps | milestone | 0d | 2006-12-09 A | 2006-12-09 A | PK000MBP1U, CK000YA306 | 100% | 2007-01-27 | 2007-01-27 |  |  |  | EBWK 6 Day Egypt Holidays | 2006-07-29 | 0 | 0 | 02 | PK | MB2 | 02H | PK | MB221 | CE | M |  | L | P |  | 101B |  |  |  |  |  |
| PK02HMBP1R |  | 02H Recv. at Site - 101-B Convection Modules | milestone | 0d | 2006-12-09 A | 2006-12-09 A | PK000MBP1V FF, CK000YA306 FF | 100% | 2007-01-27 | 2007-01-27 |  |  |  | EBWK 6 Day Egypt Holidays | 2006-07-29 | 0 | 0 | 02 | PK | MB2 | 02H | PK | MB221 | CE | M |  | L | P |  | 101B |  |  |  |  |  |
| PK02HMBP1S |  | 02H Recv. at Site - 101-B Radiant Ducting | milestone | 0d | 2006-12-09 A | 2006-12-09 A | PK000MBP1X, CK000YA306 | 100% | 2007-01-27 | 2007-01-27 |  |  |  | EBWK 6 Day Egypt Holidays | 2006-07-29 | 0 | 0 | 02 | PK | MB2 | 02H | PK | MB221 | CE | M |  | L | P |  | 101B |  |  |  |  |  |
| PK02HMBP1T |  | 02H Recv. at Site - 101-B Crossover | milestone | 0d | 2006-12-09 A | 2006-12-09 A | PK000MBP1Y, CK000YA306 | 100% | 2007-01-27 | 2007-01-27 |  |  |  | EBWK 6 Day Egypt Holidays | 2006-07-29 | 0 | 0 | 02 | PK | MB2 | 02H | PK | MB221 | CE | M |  | L | P |  | 101B |  |  |  |  |  |
| PK02HMD51Z |  | 02H Recv. at Site - 107-D Primary Reformer Tranfer Line | milestone | 0d | 2006-12-09 A | 2006-12-09 A | PK000MD51O, CK000YA306 | 100% | 2007-01-27 | 2007-01-27 |  |  |  | EBWK 6 Day Egypt Holidays | 2006-07-29 | 0 | 0 | 02 | PK | MD5 | 02H | PK | MD501 | CE | M |  | L | P |  | 107D | P | HOU |  |  |  |
| PK02JMC21Z |  | 02J Recv. at Site - 173-C Startup Cooler | milestone | 0d | 2006-12-09 A | 2006-12-09 A | PK000MC21O, CK000YA306 | 100% | 2007-01-20 | 2007-01-20 |  |  |  | EBWK 6 Day Egypt Holidays | 2006-07-29 | 0 | 0 | 02 | PK | MC2 | 02J | PK | MC210 | PE | M |  | L | P |  | 173C | EEX | HOU |  |  |  |
| PK02KMC21Z |  | 02K Recv. at Site - 174-C Stripped Condensate Cooler | milestone | 0d | 2006-12-09 A | 2006-12-09 A | PK000MC21O, CK000YA306 | 100% | 2007-01-20 | 2007-01-20 |  |  |  | EBWK 6 Day Egypt Holidays | 2006-07-29 | 0 | 0 | 02 | PK | MC2 | 02K | PK | MC210 | PE | M |  | L | P |  | 174C | EEX | HOU |  |  |  |
| PK02LMC21Z |  | 02L Recv. at Site - 110-C Lean Solution Cooler | milestone | 0d | 2006-12-09 A | 2006-12-09 A | PK000MC21O, CK000YA306 | 100% | 2007-01-20 | 2007-01-20 |  |  |  | EBWK 6 Day Egypt Holidays | 2006-07-29 | 0 | 0 | 02 | PK | MC2 | 02L | PK | MC210 | PE | M |  | L | P |  | 110C | EEX | HOU |  |  |  |
| PK02LMC23Z |  | 02L Recv. at Site - 105-C Exchanger | milestone | 0d | 2006-12-09 A | 2006-12-09 A | PK000MC23O, CK000YA306 | 100% | 2007-01-20 | 2007-01-20 |  |  |  | EBWK 6 Day Egypt Holidays | 2006-07-29 | 0 | 0 | 02 | PK | MC2 | 02L | PK | MC230 | PE | M |  | L | P |  | 107C | ST | HOU |  |  |  |
| PK02MMC21Z |  | 02M Recv. at Site - 124-C Ammonia Convr. Effluent Cooler | milestone | 0d | 2006-12-09 A | 2006-12-09 A | PK000MC21O, CK000YA306 | 100% | 2007-01-20 | 2007-01-20 |  |  |  | EBWK 6 Day Egypt Holidays | 2006-07-29 | 0 | 0 | 02 | PK | MC2 | 02M | PK | MC210 | PE | M |  | L | P |  | 124C | EEX | HOU |  |  |  |
| PK02HMB69Z |  | 02H Recv. at Site - 101-B Expansion Joints | milestone | 0d | 2006-12-11 A | 2006-12-11 A | PK000MB69O, CK000YA306 | 100% | 2007-02-10 | 2007-02-10 |  |  |  | EBWK 6 Day Egypt Holidays | 2006-07-29 | 0 | 0 | 02 | PK | MB6 | 02H | PK | MB691 | CE | M |  | L | P |  | 101B | PI | HOU |  |  |  |
| PK02CMJ21Z |  | 02C Recv. at Site - 103-J & 105-J | milestone | 0d | 2006-12-14 A | 2006-12-14 A | PK000MJ21O, CK000YA306 | 100% | 2007-01-22 | 2007-01-22 |  |  |  | EBWK 6 Day Egypt Holidays | 2006-07-29 | 0 | 0 | 02 | PK | MJ2 | 02C | PK | MJ202 |  | M |  | L | P |  | 105J | MHI | JAP |  |  | 0 |
| PK02GMJ21Z |  | 02G Recv. at Site - 102-J/JL Fd Gas Compr. & Aux. | milestone | 0d | 2006-12-14 A | 2006-12-14 A | PK000MJ21O, CK000YA306 | 100% | 2007-01-22 | 2007-01-22 |  |  |  | EBWK 6 Day Egypt Holidays | 2006-07-29 | 0 | 0 | 02 | PK | MJ2 | 02G | PK | MJ202 | CE | M |  | L | P |  | 102J | MHI | JAP |  |  |  |
| PK000I1272 |  | Recv on Site Magnetic Flow Meters | milestone | 0d | 2006-12-29 A | 2006-12-29 A | PK000I1271 FF, CK000YA306, CK000YA306 FF | 100% | 2007-02-20 | 2007-02-20 |  |  |  | EBWK 6 Day Egypt Holidays | 2006-07-29 | 0 | 0 | 02 | PK | I21 | 020 | PK | I2127 | IR | I | N | L | P | Copy |  |  |  |  |  |  |
| PK020IC220 |  | 020 Control Valves - Recv on Site | milestone | 0d | 2006-12-29 A | 2006-12-29 A | PK020IC214 FF, CK000YA306 | 100% | 2007-07-21 | 2007-07-21 |  |  |  | EBWK 6 Day Egypt Holidays | 2006-07-29 | 0 | 0 | 02 | PK | I22 | 020 | PK | I2210 | IR | I | N | L | P | Copy |  |  |  |  |  |  |
| PK000I616L |  | Recv at Site - Steam Drum Lvl Gauges | milestone | 0d | 2007-01-10 A | 2007-01-10 A | PK000I616H FS+30d, PK000I616N | 100% | 2007-01-20 | 2007-01-20 |  |  |  | EBWK 6 Day Egypt Holidays | 2006-07-29 | 0 | 0 | 02 | PK | I16 | 020 | PK | I1616 |  | I | C | L | P |  |  |  |  |  |  |  |
| PK000I611L |  | Recv at Site - Pressure Gauges - ISBL | milestone | 0d | 2007-02-03 | 2007-02-03 | PK000I611H FS+30d, PK000I611N, CK000YA306 |  |  |  | 134d | 114d |  | EBWK 6 Day Egypt Holidays | 2006-07-29 | 0 | 0 | 02 | PK | I16 | 020 | PK | I1611 |  | I | C | L | P |  |  |  |  |  |  |  |
| PK000I617L |  | Recv at Site - Magnetic Lvl Gauges | milestone | 0d | 2007-02-13 | 2007-02-13 | PK000I617H FS+30d, PK000I617N, CK000YA306 |  |  |  | 125d | 105d |  | EBWK 6 Day Egypt Holidays | 2006-07-29 | 0 | 0 | 02 | PK | I16 | 020 | PK | I1617 |  | I | C | L | P |  |  |  |  |  |  |  |
| PK02BML31Z |  | 02B Recv. at Site - 160-L Purge Gas Recovery Unit | milestone | 0d | 2007-02-24 | 2007-02-24 | PK000ML31O, CK000YA306 |  |  |  | 289d | 0d |  | EBWK 6 Day Egypt Holidays | 2006-07-29 | 0 | 0 | 02 | PK | ML3 | 02B | PK | ML313 | FE | M |  | L | P |  | 160L | CO | U/G |  |  |  |
| PK000I1141 |  | Venturis - Recv on Site | milestone | 0d | 2007-03-05 | 2007-03-05 | PK000I1131 FF, CK000YA306 |  |  |  | 586d | 57d |  | EBWK 6 Day Egypt Holidays | 2006-07-29 | 0 | 0 | 02 | PK | I21 | 020 | PK | I2112 | IR | I | N | L | P | Copy |  |  |  |  |  |  |
| PK01BMJ35Z |  | 01B Recv. at Site - 2001-JA/JB/JC, 2003-J, 2004-J/JA & 2007-J/JA Pumps | milestone | 0d | 2007-03-10 | 2007-03-10 | CK000YA306, ZZ2080 |  |  |  | 210d | 40d |  | EBWK 6 Day Egypt Holidays | 2006-07-29 | 0.3 | 0 | 01 | PK | MJ3 | 01B | PK | MJ305 | CE | M |  | L | P |  |  | GO | HOU |  |  |  |
| PK03CMJ35Z |  | 03C Recv. at Site - 2005-J/JA & 2006-J/JA Pumps | milestone | 0d | 2007-03-10 | 2007-03-10 | CK000YA306, ZZ2080 |  |  |  | 210d | 40d |  | EBWK 6 Day Egypt Holidays | 2006-07-29 | 0.3 | 0 | 03 | PK | MJ3 | 03C | PK | MJ305 | CE | M |  | L | P |  |  |  |  |  |  |  |
| PK03DMJ35Z |  | 03D Recv. at Site - 2002-J/JA Pumps | milestone | 0d | 2007-03-10 | 2007-03-10 | CK000YA306, ZZ2080 |  |  |  | 210d | 40d |  | EBWK 6 Day Egypt Holidays | 2006-07-29 | 0.3 | 0 | 03 | PK | MJ3 | 03D | PK | MJ305 | CE | M |  | L | P |  | 2002J | GO | HOU |  |  |  |
| PK05AMJ35Z |  | 05A Recv. at Site - 2106-J & 2107-J Pumps | milestone | 0d | 2007-03-10 | 2007-03-10 | CK000YA306, ZZ2080 |  |  |  | 210d | 40d |  | EBWK 6 Day Egypt Holidays | 2006-07-29 | 0.3 | 0 | 05 | PK | MJ3 | 05A | PK | MJ305 | CE | M |  | L | P |  |  | GO | HOU |  |  |  |
| PK000I623L |  | Recv at Site - Multi-Point Thermocouples | milestone | 0d | 2007-03-13 | 2007-03-13 | PK000I623H FS+30d |  |  |  | 101d | 81d |  | EBWK 6 Day Egypt Holidays | 2006-07-29 | 0 | 0 | 02 | PK | I16 | 020 | PK | I1623 |  | I | C | L | P |  |  |  |  |  |  |  |
| PK020I131L |  | Recv at Site - Transmitters -Press. | milestone | 0d | 2007-03-24 | 2007-03-24 | PK020I131H FS+30d, PK020I131N, CK000YA306 |  |  |  | 92d | 72d |  | EBWK 6 Day Egypt Holidays | 2006-07-29 | 0 | 0 | 02 | PK | I13 | 020 | PK | I1310 |  | I | C | L | P |  |  |  |  |  |  |  |

| ID | Activity | Type | Duration | Start | Finish | Predecessors | Total float | Free float | Calendar | zData Date | PCA Criticality Index | PCA Duration Sensitivity | EB02 - UNIT | EB01 - RESP | EB06 - WORK OP | EB03 - AREA | EB05 - DISCIPLINE | EB07 - REQN | EB10 - KEY | EB04 - CLASS | EB09 - IPMS | EB00 - EPC | EB21 - Rev 2 Risk Associations | EB08 - TAG | Vendor | Ship From | user_integer2 | EB11 - FLAG | Weighting | EB18 - Grouping | EB22 - Critical Actvities |
| --- | --- | --- | --- | --- | --- | --- | --- | --- | --- | --- | --- | --- | --- | --- | --- | --- | --- | --- | --- | --- | --- | --- | --- | --- | --- | --- | --- | --- | --- | --- | --- |
| PK02GMU26Z | 02G MU225 Recv. at Site - LIFT STATION | milestone | 0d | 2007-03-30 | 2007-03-30 | PK000MU225 | 302d | 31d | EBWK - 3 - 7 Day Work Week | 2006-07-29 | 0 | 0 | 02 | PK | MU2 | 02G | PK | MU225 | NE | M | L | P | 03 |  |  |  |  |  |  |  |  |
| PK02EMD34Z | 02E Recv. at Site - 106-D & 109-DA/B | milestone | 0d | 2007-03-31 | 2007-03-31 | PK000MD34O, CK000YA306 | 216d | 89d | EBWK 6 Day Egypt Holidays | 2006-07-29 | 0 | 0 | 02 | PK | MD3 | 02E | PK | MD304 | CE | M | L | P |  | 106D | FW | HOU |  |  |  |  |  |
| PK02JMD32Z | 02J Recv. at Site - 104-D1/D2 (Heavy Lift) | milestone | 0d | 2007-03-31 | 2007-03-31 | PK000MD32O, CK000YA306 | 103d | 0d | EBWK 6 Day Egypt Holidays | 2006-07-29 | 0 | 0 | 02 | PK | MD3 | 02J | PK | MD302 | HL | M | L | P |  | 104D1 | GW | HOU | 0 | HD |  |  |  |
| PK02JMD34Z | 02J Recv. at Site - 108-DA/DB Desulferizers | milestone | 0d | 2007-03-31 | 2007-03-31 | CK000YA306, ZZ2100 | 177d | 79d | EBWK 6 Day Egypt Holidays | 2006-07-29 | 0 | 0 | 02 | PK | MD3 | 02J | PK | MD304 | CE | M | L | P |  | 108DA | FW | HOU |  |  |  |  |  |
| PK02LMC23S | 02L Recv. at Site - 111-C Exchangers | milestone | 0d | 2007-03-31 | 2007-03-31 | ZZ2110 | 240d | 113d | EBWK 6 Day Egypt Holidays | 2006-07-29 | 0 | 0 | 02 | PK | MC2 | 02L | PK | MC230 | PE | M | L | P |  | 111C | EEX | HOU |  |  |  |  |  |
| PK02LMD21Z | 02L Recv. at Site - 101-E (Heavy Lift) | milestone | 0d | 2007-03-31 | 2007-03-31 | PK000MD21O, CK000YA306 | 113d | 0d | EBWK 6 Day Egypt Holidays | 2006-07-29 | 0 | 0 | 02 | PK | MD2 | 02L | PK | MD201 | HL | M | L | P |  | 101E | GW | HOU | 0 | HD | 250000 |  |  |
| PK02LMD44Z | 02L Recv. at Site - 132-F Lean Solution Flash Tank | milestone | 0d | 2007-03-31 | 2007-03-31 | PK000MD44O, CK000YA306, PK000MD44V, PK000MD44N | 80d | 95d | EBWK 6 Day Egypt Holidays | 2006-07-29 | 0 | 0 | 02 | PK | MD4 | 02L | PK | MD404 | NE | M | L | P |  | 132F | JW | HOU |  |  |  |  |  |
| PK02LMJ32Z | 02L Recv. at Site - 107-JA/B/C Lean Solution Pumps | milestone | 0d | 2007-03-31 | 2007-03-31 | PK000MJ32O, CK000YA306 | 192d | 22d | EBWK 6 Day Egypt Holidays | 2006-07-29 | 0 | 0 | 02 | PK | MJ3 | 02L | PK | MJ302 | FE | M | L | P |  | 107JA | ST | HOU |  |  |  |  |  |
| PK02LMU31Z | MU310 - Recv. at Site - Injection System & Chlorination Unit | milestone | 0d | 2007-03-31 | 2007-03-31 | PK000MU31O, CK000YA306, CK000YA306 FF | 198d | 95d | EBWK 6 Day Egypt Holidays | 2006-07-29 | 0 | 0 | 02 | PK | MU3 | 02L | PK | MU310 | NE | M | L | P | 03 | 109L | GB | HOU |  |  |  |  |  |
| PK02QMD41Z | 02Q Recv. at Site - 101-F Steam Drum | milestone | 0d | 2007-03-31 | 2007-03-31 | PK000MD41O, CK000YA306 | 192d | 91d | EBWK 6 Day Egypt Holidays | 2006-07-29 | 0 | 0 | 02 | PK | MD4 | 02Q | PK | MD401 | CE | M | L | P |  | 101F | LT | IND |  |  | 91000 |  |  |
| ZZ2120 | 02L Recv. at Site - 107-C Exchanger | milestone | 0d | 2007-03-31 | 2007-03-31 | ZZ2110 | 80d | 95d | EBWK 6 Day Egypt Holidays | 2006-07-29 | 0 | 0 | 02 | PK | MC2 | 02L | PK | MC230 | PE | M | L | P |  | 107C | ST | HOU |  |  |  |  |  |
| PK02HMB51Z | 02H Recv. at Site - 101-B Insulation | milestone | 0d | 2007-04-02 | 2007-04-02 | PK000MB51O, CK000YA306, CK000YA306 FF | 219d | 45d | EBWK 6 Day Egypt Holidays | 2006-07-29 | 0 | 0 | 02 | PK | MB5 | 02H | PK | MB511 | CE | M | L | P |  | 101B | TH | USA |  |  |  |  |  |
| PK02GMJ22Z | Recv. at Site - 101-J/JL/JT/JC-A,B,C Air Compr | milestone | 0d | 2007-04-07 | 2007-04-07 | PK000MJ22O, CK000YA306 | 105d | 0d | EBWK 6 Day Egypt Holidays | 2006-07-29 | 0 | 0 | 02 | PK | MJ2 | 02G | PK | MJ201 |  | M | L | P |  | 101J | S | GER | 0 |  | 157400 |  |  |
| PK02HMB62Z | 02H Recv. at Site - 101-B ID & FD Fans | milestone | 0d | 2007-04-07 | 2007-04-07 | PK000MB62O, CK000YA306 | 234d | 0d | EBWK 6 Day Egypt Holidays | 2006-07-29 | 0 | 0 | 02 | PK | MB6 | 02H | PK | MB621 | CE | M | L | P |  | 101BJ1 | CL | HOU |  |  |  |  |  |
| PK02FMJ34Z | 02F Recv. at Site - 2003-J/JA MP BFW Pumps | milestone | 0d | 2007-04-19 | 2007-04-19 | PK000MJ34O, CK000YA306 | 198d | 22d | EBWK 6 Day Egypt Holidays | 2006-07-29 | 0 | 0 | 02 | PK | MJ3 | 02F | PK | MJ304 | FE | M | L | P |  | 2003J | GO | NY |  |  |  |  |  |
| PK02CMJ35Z | 02C Recv. at Site - 112-J/JA Pumps | milestone | 0d | 2007-04-24 | 2007-04-24 | PK000MJ35O, CK000YA306 | 205d | 0d | EBWK 6 Day Egypt Holidays | 2006-07-29 | 0 | 0 | 02 | PK | MJ3 | 02C | PK | MJ305 | CE | M | L | P |  | 112J | GO | HOU |  |  |  |  |  |
| PK02DMJ35Z | 02D Recv. at Site - 120-J/JA, 124-J/JA Pumps | milestone | 0d | 2007-04-24 | 2007-04-24 | PK000MJ35O, CK000YA306 | 182d | 0d | EBWK 6 Day Egypt Holidays | 2006-07-29 | 0 | 0 | 02 | PK | MJ3 | 02D | PK | MJ305 | CE | M | L | P |  | 120J | GO | HOU |  |  |  |  |  |
| PK02GMJ35Z | 02G Recv. at Site - 113-J/JA Condensate Pumps | milestone | 0d | 2007-04-24 | 2007-04-24 | PK000MJ35O, CK000YA306 | 199d | 0d | EBWK 6 Day Egypt Holidays | 2006-07-29 | 0 | 0 | 02 | PK | MJ3 | 02G | PK | MJ305 | CE | M | L | P |  | 113J | GO | HOU |  |  |  |  |  |
| PK02KMJ35Z | 02K Recv. at Site - 111-J, 115-J Benfield Transfer & Sump Pumps | milestone | 0d | 2007-04-24 | 2007-04-24 | PK000MJ35O, CK000YA306 | 163d | 0d | EBWK 6 Day Egypt Holidays | 2006-07-29 | 0.2 | 0 | 02 | PK | MJ3 | 02K | PK | MJ305 | CE | M | L | P |  | 111J | GO | HOU |  |  |  |  |  |
| PK02LMJ35Z | 02L Recv. at Site - 116-J/JA & 121-J/JA Pumps | milestone | 0d | 2007-04-24 | 2007-04-24 | PK000MJ35O, CK000YA306 | 170d | 0d | EBWK 6 Day Egypt Holidays | 2006-07-29 | 0.3 | 0 | 02 | PK | MJ3 | 02L | PK | MJ305 | CE | M | L | P |  | 116J | GO | HOU |  |  |  |  |  |
| PK02JMC32Z | 02J Recv. at Site - 103-C1/C2 HTS Effluent BFW Preheater/ Stm Gen's | milestone | 0d | 2007-04-26 | 2007-04-26 | PK000MC32O, CK000YA306 | 153d | 55d | EBWK 6 Day Egypt Holidays | 2006-07-29 | 0 | 0 | 02 | PK | MC3 | 02J | PK | MC311 | PE | M | L | P |  | 103C1 | K | HOU |  |  |  |  |  |
| PK02MMC32Z | 02M Recv. at Site - 123-C1/ C2A/ C2B Exchangers | milestone | 0d | 2007-04-26 | 2007-04-26 | PK000MC32O, CK000YA306 | 188d | 41d | EBWK 6 Day Egypt Holidays | 2006-07-29 | 0 | 0 | 02 | PK | MC3 | 02M | PK | MC311 | PE | M | L | P |  | 123C1 | K | HOU |  |  |  |  |  |
| PK020MC31I | 02N Recv. at Site - 121-C (Heavy Lift) | milestone | 0d | 2007-05-05 | 2007-05-05 | CK000YA306, PK020MC31J | 110d | 54d | EBWK 6 Day Egypt Holidays | 2006-07-29 | 0 | 0 | 02 | PK | MC3 | 02N | PK | MC312 | HL | M | L | P |  | 121C | LT | IND | 0 | HD |  |  |  |
| PK02HMD31Z | 02H Recv. at Site - 103-D (Heavy Lift) | milestone | 0d | 2007-05-05 | 2007-05-05 | PK000MD31O, CK000YA306 | 68d | 0d | EBWK 6 Day Egypt Holidays | 2006-07-29 | 0 | 0 | 02 | PK | MD3 | 02H | PK | MD301 | HL | M | L | P |  | 103D | LT | IND | 0 | HD |  |  |  |
| PK02NMC32Z | 02N Recv. at Site - 120-C (Heavy Lift) | milestone | 0d | 2007-05-05 | 2007-05-05 | CK000YA306, PK020MC31L | 110d | 54d | EBWK 6 Day Egypt Holidays | 2006-07-29 | 0 | 0 | 02 | PK | MC3 | 02N | PK | MC312 | HL | M | L | P |  | 120C | LT | IND | 0 | HD |  |  |  |
| PK000I2335 | On/Off Valves - Recv on Site | milestone | 0d | 2007-05-12 | 2007-05-12 | PK000I2330 FF, CK000YA306 | 529d | 0d | EBWK 6 Day Egypt Holidays | 2006-07-29 | 0 | 0 | 02 | PK | I22 | 020 | PK | I2230 | IR | I | L | P |  |  |  |  |  | N |  | Copy |  |
| PK02FMJ31Z | 02F Recv. at Site - 104-J HP BFW Pump | milestone | 0d | 2007-05-15 | 2007-05-15 | PK000MJ31O, CK000YA306 | 176d | 0d | EBWK 6 Day Egypt Holidays | 2006-07-29 | 0 | 0 | 02 | PK | MJ3 | 02F | PK | MJ301 | FE | M | L | P |  | 104J | F | HOU |  |  |  |  |  |
| PK02LMD21Y | 02L Recv. at Site - 102-E (Heavy Lift) | milestone | 0d | 2007-05-19 | 2007-05-19 | PK000MD211 | 76d | 0d | EBWK 6 Day Egypt Holidays | 2006-07-29 | 0 | 0 | 02 | PK | MD2 | 02L | PK | MD201 | HL | M | L | P |  | 102E | FW | HOU | 0 | HD |  |  |  |
| PK000I621L | Recv at Site - Temperature Elements | milestone | 0d | 2007-05-26 | 2007-05-26 | PK000I621H FS+30d, PK000I621N, CK000YA306 | 38d | 18d | EBWK 6 Day Egypt Holidays | 2006-07-29 | 0 | 0 | 02 | PK | I16 | 020 | PK | I1621 |  | I | L | P |  |  |  |  |  | C |  |  |  |
| PK000I612L | Recv at Site - Differential Pressure Gauges | milestone | 0d | 2007-05-30 | 2007-05-30 | PK000I612H FS+30d, PK000I612N, CK000YA306 | 34d | 14d | EBWK 6 Day Egypt Holidays | 2006-07-29 | 0 | 0 | 02 | PK | I16 | 020 | PK | I1612 |  | I | L | P |  |  |  |  |  | C |  |  |  |
| PK000MD112 | MD305 Merc. Removal Bed - Recieve at Site | milestone | 0d | 2007-06-02 | 2007-06-02 | PK000MD111 | 166d | 19d | EBWK 6 Day Egypt Holidays | 2006-07-29 | 0 | 0 | 02 | PK | MD3 | 02A | MD | MD305 | FE | M | L | P | 03 |  |  |  |  |  |  |  |  |
| PK02KMD22Z | 02K Recv. at Site - 150-E Process Cond. Stripper | milestone | 0d | 2007-06-02 | 2007-06-02 | PK000MD22O, CK000YA306, PK000MD22V, PK000MD22C | 101d | 0d | EBWK 6 Day Egypt Holidays | 2006-07-29 | 0 | 0 | 02 | PK | MD2 | 02K | PK | MD202 | FE | M | L | P |  | 150E | JW | HOU |  |  |  |  |  |
| PK02LMD42Z | 02L Recv. at Site - 102-F1/F2 Raw Gas Seperator/ CO2 Absorber | milestone | 0d | 2007-06-09 | 2007-06-09 | PK000MD42O, CK000YA306 | 138d | 35d | EBWK 6 Day Egypt Holidays | 2006-07-29 | 0 | 0 | 02 | PK | MD4 | 02L | PK | MD402 | CE | M | L | P |  | 102F1 | JW | HOU |  |  |  |  |  |
| PK02MMD33Z | 02M Recv. at Site - 105-D (Heavy Lift) | milestone | 0d | 2007-06-09 | 2007-06-09 | PK000MD33O, CK000YA306 | 63d | 0d | EBWK 6 Day Egypt Holidays | 2006-07-29 | 0 | 0 | 02 | PK | MD3 | 02M | PK | MD303 | HL | M | L | P |  | 105D | LT | IND | 0 | HD |  |  |  |
| PK02DMD43Z | 02D Recv. at Site - 106-F Ammonia Separator | milestone | 0d | 2007-06-23 | 2007-06-23 | PK000MD43O, CK000YA306 | 138d | 5d | EBWK 6 Day Egypt Holidays | 2006-07-29 | 0 | 0 | 02 | PK | MD4 | 02D | PK | MD403 | CE | M | L | P |  | 106F | LT | IND |  |  |  |  |  |
| PK02HMC31Z | 02H Recv. at Site - 101-C & 102-C (Heavy Lift) | milestone | 0d | 2007-08-28 | 2007-08-28 | PK000MC31O, CK000YA306 | 10d | 0d | EBWK 6 Day Egypt Holidays | 2006-07-29 | 8.9 | 0 | 02 | PK | MC3 | 02H | PK | MC310 | HL | M | L | P |  | 101C | LT | IND |  | HD | 224704 |  | C5 |
| PK020PR20S | PR201 KAAP Catalyst - Recv. at Site | milestone | 0d | 2008-02-11 | 2008-02-11 | PK000PR20J | 31d | 0d | EBWK 6 Day Egypt Holidays | 2006-07-29 | 0 | 0 | 02 | PK | MB2 | 02H | PK | PR201 | CE | M | L | P |  |  |  |  |  |  |  |  | C5 |

Notes:
- PK02QMD41Z: user_text1: L&T order, delays due to flooding.
- PK020MC31I: user_text1: L&T order, delays due to flooding.
- PK02HMD31Z: user_text1: L&T order, delays due to flooding. Tube Sheet inspection is rejected.
- PK02NMC32Z: user_text1: L&T order, delays due to flooding.
- PK02MMD33Z: user_text1: L&T order, delays due to flooding.
- PK02DMD43Z: user_text1: L&T order, delays due to flooding.
- PK02HMC31Z: user_text1: L&T order, delays due to flooding.

| ID | WBS | Activity | Type | Duration | Start | Finish | Predecessors | Complete | Remaining | Planned start | Planned finish | Total float | Free float | Calendar | zData Date | PCA Criticality Index | PCA Duration Sensitivity | EB02 - UNIT | EB01 - RESP | EB06 - WORK OP | EB03 - AREA | EB05 - DISCIPLINE | EB04 - CLASS | EB11 - FLAG | EB00 - EPC | EB17 - Suffix | user_end_date1 | EB10 - KEY | EB12 - TEMP | user_integer2 | EB14 - RISK | EB07 - REQN |
| --- | --- | --- | --- | --- | --- | --- | --- | --- | --- | --- | --- | --- | --- | --- | --- | --- | --- | --- | --- | --- | --- | --- | --- | --- | --- | --- | --- | --- | --- | --- | --- | --- |
|  | E2B2 | **All Other Areas (HOC)** |  |  | 2004-08-02 | 2008-02-11 |  |  |  |  |  |  |  |  |  |  |  |  |  |  |  |  |  |  |  |  |  |  |  |  |  |  |
|  | E | **Engineering (HOC)** |  |  | 2004-08-02 | 2007-06-02 |  |  |  |  |  |  |  |  |  |  |  |  |  |  |  |  |  |  |  |  |  |  |  |  |  |  |
|  | 00 | **Common** |  |  | 2004-08-02 | 2007-06-02 |  |  |  |  |  |  |  |  |  |  |  |  |  |  |  |  |  |  |  |  |  |  |  |  |  |  |
| EK000CK085 |  | Establish bank account in Egypt |  | 80d | 2004-08-02 A | 2006-02-24 A | EK000YA002 SS | 100% |  | 2005-02-28 | 2005-06-20 |  |  |  | 2006-07-29 | 0 | 0 | 00 | EK | 000 | 000 | FA | G | X | E |  |  |  |  |  |  |  |
| EK000GE005 |  | Estimate Escalation Check - Info to Estimating |  | 20d | 2005-02-21 A | 2005-03-16 A | EK000YA002 SS | 100% |  | 2005-02-21 | 2005-03-18 |  |  |  | 2006-07-29 | 0 | 0 | 00 | EK | G30 | 000 | GE | G | X | E |  |  |  |  |  |  |  |
| EK000IM010 |  | Object Engineering set-up & procedures |  | 30d | 2005-02-21 A | 2005-05-13 A | EK000PR076 FF, EK000YA002 SS | 100% |  | 2005-02-21 | 2005-04-01 |  |  |  | 2006-07-29 | 0 | 0 | 00 | EK | G10 | 000 | IM | X | X | E |  |  |  |  |  |  |  |
| EK000IM020 |  | IM Strategy plan |  | 21d | 2005-02-21 A | 2005-04-11 A | EK000YA002 SS | 100% |  | 2005-02-21 | 2005-03-21 |  |  |  | 2006-07-29 | 0 | 0 | 00 | EK | G10 | 000 | IM | X | X | E |  |  |  |  |  |  |  |
| EK000IM025 |  | IM Execution plan |  | 21d | 2005-02-21 A | 2005-04-11 A | EK000YA002 SS | 100% |  | 2005-02-21 | 2005-03-21 |  |  |  | 2006-07-29 | 0 | 0 | 00 | EK | G10 | 000 | IM | X | X | E |  |  |  |  |  |  |  |
| EK000IM030 |  | Project Portal & Dashboard |  | 40d | 2005-02-21 A | 2005-04-05 A | EK000YA002 SS | 100% |  | 2005-02-21 | 2005-04-15 |  |  |  | 2006-07-29 | 0 | 0 | 00 | EK | G10 | 000 | IM | X | X | E |  |  |  |  |  |  |  |
| EK000PE025 |  | Document Management Plan - Issue for Review |  | 20d | 2005-02-21 A | 2005-03-18 A | EK000YA002 SS | 100% |  |  |  |  |  |  | 2006-07-29 | 0 | 0 | 00 | EK | G10 | 000 | IM | X | X | E |  |  |  |  |  |  |  |
| EK000PM015 |  | Project Coordination Procedure - IFA |  | 21d | 2005-02-21 A | 2005-03-25 A | EK000YA002 SS | 100% |  | 2005-02-21 | 2005-03-21 |  |  |  | 2006-07-29 | 0 | 0 | 00 | EK | 000 | 000 | PM | G | X | E |  |  |  |  |  |  |  |
| EK000YA002 |  | Start Project | milestone | 0d | 2005-02-21 A | 2005-02-21 A |  | 100% |  |  |  |  |  |  | 2006-07-29 | 0 | 0 | 00 | EK | 000 | 000 | YA | G | X | E |  |  |  |  |  |  |  |
| EK000IM005 |  | Equipment List (MEL) Definition |  | 45d | 2005-02-28 A | 2005-04-29 A | EK000YA002 SS | 100% |  |  |  |  |  |  | 2006-07-29 | 0 | 0 | 00 | EK | G10 | 000 | IM | M | X | E |  |  |  |  |  |  |  |
| EK000IM040 |  | Establish Citrix for Test of PDS (HOC-MEC) |  | 20d | 2005-02-28 A | 2005-03-25 A | EK000YA002 SS | 100% |  |  |  |  |  |  | 2006-07-29 | 0 | 0 | 00 | EK | G10 | 000 | IM | X | X | E |  |  |  |  |  |  |  |
| EK000IM035 |  | Establish Documentum |  | 10d | 2005-03-07 A | 2005-03-18 A | EK000YA002 SS | 100% |  |  |  |  |  |  | 2006-07-29 | 0 | 0 | 00 | EK | G10 | 000 | IM | X | X | E |  |  |  |  |  |  |  |
| EK000PS015 |  | Issue 90 Day look ahead schedule |  | 13d | 2005-03-07 A | 2005-03-23 A | EK000YA002 SS | 100% |  |  |  |  |  |  | 2006-07-29 | 0 | 0 | 00 | EK | G10 | 000 | PS | X | X | E |  |  |  |  |  |  |  |
| EK000QM010 |  | Training - Export Compliance |  | 0d | 2005-03-10 A | 2005-03-10 A | EK000YA002 SS | 100% |  |  |  |  |  |  | 2006-07-29 | 0 | 0 | 00 | EK | G10 | 000 | QM | X | X | E |  |  |  |  |  |  |  |
| EK000PC005 |  | Prepare Estimate for Escalation Check |  | 7d | 2005-03-17 A | 2005-03-25 A | EK000GE005 | 100% |  |  |  |  |  |  | 2006-07-29 | 0 | 0 | 00 | EK | G30 | 000 | PC | X | X | E |  |  |  |  |  |  |  |
| EK000PE015 |  | MSD (From Metallurgy) - ISBL |  | 6d | 2005-03-17 A | 2005-03-29 A | EK000PR020, EK000PR035 | 100% |  | 2005-03-17 | 2005-03-24 |  |  |  | 2006-07-29 | 0 | 0 | 00 | EK | G20 | 000 | CE | X | X | E |  |  |  |  |  |  |  |
| EK000QM015 |  | Develop & Issue Quality Plan |  | 11d | 2005-03-18 A | 2005-04-15 A | EK000PE090 FF+5d | 100% |  | 2005-03-18 | 2005-04-01 |  |  |  | 2006-07-29 | 0 | 0 | 00 | EK | G10 | 000 | QM | X | X | E |  |  |  |  |  |  |  |
| EK000IM045 |  | Establish IPMS |  | 10d | 2005-03-21 A | 2005-03-31 A | EK020PI010 FF+3d | 100% |  | 2005-03-21 | 2005-04-01 |  |  |  | 2006-07-29 | 0 | 0 | 00 | EK | G10 | 000 | IM | X | X | E |  |  |  |  |  |  |  |
| EK000PE035 |  | Rvw Lesson Learn w/Prj. Team&Develop Action List |  | 15d | 2005-03-21 A | 2005-04-15 A | EK000YA002 SS+20d | 100% |  | 2005-03-21 | 2005-04-08 |  |  |  | 2006-07-29 | 0 | 0 | 00 | EK | G10 | 000 | QM | X | X | E |  |  |  |  |  |  |  |
| EK000PK030 |  | Provide Job Specific SDR2 Priorities to Purch. |  | 10d | 2005-03-21 A | 2005-04-01 A | EK000GE005 | 100% |  |  |  |  |  |  | 2006-07-29 | 0 | 0 | 00 | EK | G10 | 000 | GE | G | X | E |  |  |  |  |  |  |  |
| EK000PM055 |  | Complete EPC Insurance Forms |  | 39d | 2005-03-21 A | 2005-06-03 A | EK000YA002 SS+20d | 100% |  | 2005-03-21 | 2005-05-12 |  |  |  | 2006-07-29 | 0 | 0 | 00 | EK | 000 | 000 | PM | G | X | E |  |  |  |  |  |  |  |
| EK000PR145 |  | Eng. Studies - Ammonia Product Line U/G vs. A/G |  | 20d | 2005-03-21 A | 2005-04-29 A | EK000YA002 SS+15d | 100% |  | 2005-03-21 | 2005-04-15 |  |  |  | 2006-07-29 | 0 | 0 | 00 | EK | G40 | 000 | GE | G | X | E | E2B2 |  |  |  |  |  |  |
| EK000YA804 |  | (EP-05) Issue Heat and Material Balance for Process Release | milestone | 0d | 2005-03-25 A | 2005-03-25 A | EK000PR020 FF | 100% |  | 2005-08-27 | 2005-08-27 |  |  |  | 2006-07-29 | 0 | 0 | 00 | EK | 000 | 000 | YA | G | Z | E |  | 2005-08-27 | PM |  |  |  |  |
| EK000YA805 |  | (EP-06) Issue Equipment List for review | milestone | 0d | 2005-03-25 A | 2005-03-25 A | EK000PE125 FF | 100% |  | 2005-08-27 | 2005-08-27 |  |  |  | 2006-07-29 | 0 | 0 | 00 | EK | 000 | 000 | YA | G | Z | E |  | 2005-08-27 | PM |  |  |  |  |
| EK000YA807 |  | (EP-08) Issue Utility Balances for Initial Release | milestone | 0d | 2005-03-25 A | 2005-03-25 A | EK000PR040 FF, EK000PR020 FF, EK000PR045 FF | 100% |  | 2005-06-25 | 2005-06-25 |  |  |  | 2006-07-29 | 0 | 0 | 00 | EK | 000 | 000 | YA | G | Z | E |  | 2005-09-24 | PM |  |  |  |  |
| EK000CK080 |  | Expedite legal issues associated w/ KBRII |  | 19d | 2005-03-25 A | 2006-03-31 A | EK000YA002 SS | 100% |  | 2005-03-25 | 2005-04-20 |  |  |  | 2006-07-29 | 0 | 0 | 00 | EK | 000 | 000 | FA | G | X | X |  |  |  |  |  |  |  |
| EK000GE010 |  | Eng. Studies - Air Coolers vs. Cooling Water |  | 10d | 2005-03-28 A | 2005-04-11 A | EK000PR115 | 100% |  | 2005-03-28 | 2005-04-08 |  |  |  | 2006-07-29 | 0 | 0 | 00 | EK | G40 | 000 | GE | G | X | E |  |  |  |  |  |  |  |
| EK000PE065 |  | Develop & Issue HOC - MEC Coordination Plan |  | 20d | 2005-03-28 A | 2005-04-22 A | EK000PE050 | 100% |  |  |  |  |  |  | 2006-07-29 | 0 | 0 | 00 | EK | G10 | 000 | GE | G | X | E |  |  |  |  |  |  |  |
| EK000PK010 |  | Issue critical req'n submittal sched to Procmnt |  | 10d | 2005-03-28 A | 2005-04-08 A | EK000PS015, PK000MM020 FF+5d | 100% |  |  |  |  |  |  | 2006-07-29 | 0 | 0 | 00 | EK | G10 | 000 | PS | X | X | E |  |  |  |  |  |  |  |
| EK000PM030 |  | Estimate Escalation Check - IRC Approvals |  | 4d | 2005-03-28 A | 2005-03-31 A | EK000GE005, EK000PC005 | 100% |  |  |  |  |  |  | 2006-07-29 | 0 | 0 | 00 | EK | 000 | 000 | PM | G | X | E |  |  |  |  |  |  |  |
| EK000PM045 |  | Issue Execution Strategy /Project Execution Plan |  | 15d | 2005-03-28 A | 2005-06-24 A | EK000CV015 FF+5d, EK000EL005 FF+5d, EK000EV025 FF+5d, EK000IC045 FF, EK000MB005 FF+5d, EK000MC010 FF+5d, EK000MD060 FF+5d, EK000PE090 FF+5d, EK000PI040 FF+5d, EK000QM015 FF+5d, EK000SY005 FF+5d, EK000YA002 SS+10d | 100% |  | 2005-03-28 | 2005-04-15 |  |  |  | 2006-07-29 | 0 | 0 | 00 | EK | G10 | 000 | QM | X | X | E |  |  |  |  |  |  |  |
| EK000YA808 |  | (EP-09) Issue Engineering Plan | milestone | 0d | 2005-04-01 A | 2005-04-01 A | EK000PE090 FF | 100% |  | 2005-09-24 | 2005-09-24 |  |  |  | 2006-07-29 | 0 | 0 | 00 | EK | 000 | 000 | YA | G | Z | E |  | 2005-09-24 | PM |  |  |  |  |
| EK000PE020 |  | WMS Setup & Development |  | 3d | 2005-04-06 A | 2005-04-14 A | EK000PM030 FS+2d | 100% |  | 2005-04-06 | 2005-04-08 |  |  |  | 2006-07-29 | 0 | 0 | 00 | EK | G10 | 000 | PC | X | X | E |  |  |  |  |  |  |  |
| EK000PC010 |  | Estimate Turnover to Project Team |  | 2d | 2005-04-08 A | 2005-04-14 A | EK000PM030 FS+3d | 100% |  | 2005-04-08 | 2005-04-11 |  |  |  | 2006-07-29 | 0 | 0 | 00 | EK | G30 | 000 | PC | X | X | E |  |  |  |  |  |  |  |
| EK000PC015 |  | Estimate Recast & Develop Project Control Budget |  | 10d | 2005-04-08 A | 2005-05-23 A | EK000CV070 FF, EK000PC010 FF | 100% |  | 2005-04-08 | 2005-04-21 |  |  |  | 2006-07-29 | 0 | 0 | 00 | EK | G30 | 000 | PC | X | X | E |  |  |  |  |  |  |  |
| EK000PE095 |  | Disciplines Load WMS with Budgets & Deliverables |  | 5d | 2005-04-15 A | 2005-05-20 A | EK000PC010 SS | 100% |  | 2005-04-15 | 2005-04-21 |  |  |  | 2006-07-29 | 0 | 0 | 00 | EK | G10 | 000 | GE | G | X | E |  |  |  |  |  |  |  |
| EK000YA802 |  | (EP-03) Issue Process Plan | milestone | 0d | 2005-04-22 A | 2005-04-22 A | EK000PR010 FF | 100% |  | 2005-06-25 | 2005-06-25 |  |  |  | 2006-07-29 | 0 | 0 | 00 | EK | 000 | 000 | YA | G | Z | E |  | 2005-07-30 | PM |  |  |  |  |
| EK000QM020 |  | Develop/ Issue/ Approval of QA/QC Manual (EBIC/EXIM Verification) |  | 15d | 2005-05-02 A | 2005-11-30 A | EK000PM045 FF, EK000EB015 FF+5d | 100% |  | 2005-06-07 | 2005-06-27 |  |  |  | 2006-07-29 | 0 | 0 | 00 | EK | G10 | 000 | QM | X | X | E |  |  |  |  |  |  |  |
| EK000PS010 |  | Level III CPM Schedule / First Planner |  | 34d | 2005-05-09 A | 2005-06-24 A | EK000PE115, EK000PI085, EK000PI140 FF+15d, EK000PI160, EK000PK030, EK000PS015 FS+14d, EK000CS030, PK000MM010 FF | 100% |  |  |  |  |  |  | 2006-07-29 | 0 | 0 | 00 | EK | G10 | 000 | PS | X | X | E |  |  |  |  |  |  |  |
| EK000PC020 |  | Load PCMS & Issue First Cost Report |  | 11d | 2005-06-03 A | 2005-06-17 A | EK000PC015 | 100% |  |  |  |  |  |  | 2006-07-29 | 0 | 0 | 00 | EK | G10 | 000 | PC | X | X | E |  |  |  |  |  |  |  |
| EK000YA005 |  | Process Release | milestone | 0d | 2005-06-08 A | 2005-06-08 A | EK000PR140 FF | 100% |  | 2005-06-03 | 2005-06-03 |  |  |  | 2006-07-29 | 0 | 0 | 00 | EK | 000 | 000 | YA | G | X | E |  |  |  |  |  |  |  |
| EK000YA811 |  | (EP-12) Issue Process Release | milestone | 0d | 2005-06-08 A | 2005-06-08 A | EK000PR140 FF | 100% |  | 2005-10-29 | 2005-10-29 |  |  |  | 2006-07-29 | 0 | 0 | 00 | EK | 000 | 000 | YA | G | Z | E |  | 2005-10-29 | PM | Y |  |  |  |
| EK000YA806 |  | (EP-07) Issue Project Plan | milestone | 0d | 2005-06-24 A | 2005-06-24 A | EK000PM045 FF | 100% |  | 2005-06-25 | 2005-06-25 |  |  |  | 2006-07-29 | 0 | 0 | 00 | EK | 000 | 000 | YA | G | Z | E |  | 2005-08-27 | PM |  |  |  |  |
| EK000YA801 |  | (EP-02) Issue 30 day Look Ahead Schedule | milestone | 0d | 2005-06-27 A | 2005-06-27 A | EK000PS015 FF | 100% |  |  |  |  |  |  | 2006-07-29 | 0 | 0 | 00 | EK | 000 | 000 | YA | G | Z | E |  | 2005-09-24 | PM |  |  |  |  |
| EK000PS040 |  | Incorporate Comments / Issue Baseline Schedule |  | 9d | 2005-07-05 A | 2005-07-15 A | EK000PS010, EK000PS030 | 100% |  |  |  |  |  |  | 2006-07-29 | 0 | 0 | 00 | EK | G10 | 000 | PS | X | X | E |  |  |  |  |  |  |  |
| EK000QM025 |  | Training - Management System |  | 1d | 2005-07-05 A | 2005-07-05 A | EK000PM045 FS+5d | 100% |  |  |  |  |  |  | 2006-07-29 | 0 | 0 | 00 | EK | G10 | 000 | QM | X | X | E |  |  |  |  |  |  |  |
| EK000PS030 |  | Schedule Risk Analysis |  | 4d | 2005-07-11 A | 2005-07-21 A | EK000PS010 | 100% |  | 2005-06-27 | 2005-06-30 |  |  |  | 2006-07-29 | 0 | 0 | 00 | EK | G10 | 000 | PS | X | X | E |  |  |  |  |  |  |  |
| EK000YA809 |  | (EP-10) Locate Utility Tie-Ins | milestone | 0d | 2005-07-27 A | 2005-07-27 A | EK000PI005 FF, EK000CK060 FF, EK000EB015 FF+30d | 100% |  | 2005-10-21 | 2005-10-21 |  |  |  | 2006-07-29 | 0 | 0 | 00 | EK | 000 | 000 | YA | G | Z | E |  | 2005-09-24 | PM |  |  |  |  |
| EK000YA810 |  | (EP-11) Issue Level 3 CPM Schedule | milestone | 0d | 2005-09-02 A | 2005-09-02 A | EK000PS040 FF, EK000YA801 FF | 100% |  |  |  |  |  |  | 2006-07-29 | 0 | 0 | 00 | EK | 000 | 000 | YA | G | Z | E |  | 2005-09-24 | PM |  |  |  |  |
| EK000QM005 |  | Training - Object Engineering |  | 5d | 2005-09-05 A | 2005-09-12 A | EK000IM010 FS+37d, EK000PI055 | 100% |  | 2005-09-05 | 2005-09-09 |  |  |  | 2006-07-29 | 0 | 0 | 00 | EK | G10 | 000 | IM | X | X | E |  |  |  |  |  |  |  |
| EK000EB015 |  | Notice to Proceed (Eng. & Procurement Only) | milestone | 0d | 2005-09-09 A | 2005-09-09 A | EK000CV005 FF, EK000EB005 FF, EK000MD005 FF, EK000PC015 FF, EK000PE020 FF, EK000PK010 FF+15d, EK000PM055 FF, EK000QM010 FF, PK000PK040 FF | 100% |  |  |  |  |  |  | 2006-07-29 | 0 | 0 | 00 | EK | 000 | 000 | YA | G | Z | E |  | 2005-08-22 |  |  | 0 | 07 |  |
| EK000YA813 |  | (EP-14) Issue Plot Plans for Client Approval | milestone | 0d | 2005-11-11 A | 2005-11-11 A | EK010PI010 FF, EK020PI010 FF, EK030PI010 FF, EK050PI010 FF | 100% |  | 2005-11-30 | 2005-11-30 |  |  |  | 2006-07-29 | 0 | 0 | 00 | EK | 000 | 000 | YA | G | Z | E |  | 2005-11-26 | PM |  |  |  |  |
| EK000FA005 |  | Issue First Invoice to EBIC | milestone | 0d | 2005-12-19 A | 2005-12-19 A | EK000EB015 FF+5d | 100% |  |  |  |  |  |  | 2006-07-29 | 0 | 0 | 00 | EK | G10 | 000 | FA | G | X | E |  | 2005-07-05 |  |  |  |  |  |
| EK000GE025 |  | First Check Estimate |  | 30d | 2006-01-30 A | 2006-03-30 A | EK000GE005 | 100% |  | 2006-02-27 | 2006-04-07 |  |  |  | 2006-07-29 | 0 | 0 | 00 | EK | G30 | 000 | GE | G | PS | E |  |  |  | Y |  |  | Gen |
| EK000YA822 |  | (EP-22) Issue for Planning (IPL) >90% OSBL P&ID's | milestone | 0d | 2006-03-11 A | 2006-03-11 A | EK010SY090 FF, EK030SY090 FF, EK050SY090 FF | 100% |  |  |  |  |  | EBWK 7 Day No Holidays | 2006-07-29 | 0 | 0 | 00 | EK | 000 | 000 | YA | G | Z | E |  | 2006-03-25 | PM |  |  |  | Gen |
| EK000YA824 |  | (EP-23) Issue For Planning (IPL) >90% ISBL P&ID's | milestone | 0d | 2006-03-11 A | 2006-03-11 A | EK020SY090 FF | 100% |  |  |  |  |  | EBWK 7 Day No Holidays | 2006-07-29 | 0 | 0 | 00 | EK | 000 | 000 | YA | G | Z | E |  | 2006-03-25 | PM |  |  |  | Gen |
| EK000YA831 |  | (EP-26) Complete Hazard Review Meeting on >90% ISBL P&ID's | milestone | 0d | 2006-03-27 A | 2006-03-27 A | EK000YA002 | 100% |  |  |  |  |  | EBWK 7 Day No Holidays | 2006-07-29 | 0 | 0 | 00 | EK | 000 | 000 | YA | G | Z | E |  | 2006-06-24 | PM |  |  |  | Gen |
| EK000YA826 |  | (EP-27) Begin Issuing Area Line Installation Details (IDF Files) | milestone | 0d | 2006-04-04 A | 2006-04-04 A | EM02API132, EM02BPI132, EM02CPI132, EM02DPI132, EM02EPI132, EM02FPI132, EM02HPI132, EM02JPI132, EM02KPI140, EM02LPI132, EM02MPI132, EM02NPI132, EM02PPI132, EM02QPI132 | 100% |  | 2006-06-05 | 2006-06-05 |  |  | EBWK 7 Day No Holidays | 2006-07-29 | 0 | 0 | 00 | EK | 000 | 000 | YA | G | PS | E |  | 2006-04-29 | PM | Y |  |  | Gen |
| EK000YA841 |  | (EP-29) Issue OSBL Plot Plan for Construction (IFC) | milestone | 0d | 2006-06-20 A | 2006-06-20 A | EK030PI014 FF, EK050PI014 SF, EK010PI014 FF | 100% |  | 2006-11-20 | 2006-11-20 |  |  | EBWK 7 Day No Holidays | 2006-07-29 | 0 | 0 | 00 | EK | 000 | 000 | YA | G | PS | E |  | 2006-10-28 | PM | Y |  |  | Gen |
| EK020ELEG5 |  | Cathodic Protection - Design & Specs Package (By Consultant) |  | 45d | 2006-09-01 A | 2006-11-27 A | EK020ELEG2 | 100% |  | 2006-09-01 | 2006-11-02 |  |  | EBWK - Global | 2006-07-29 | 0 | 0 | 00 | PK | EG2 | 000 | EL | X |  | E | E2B2 |  |  |  |  |  |  |
| EK000GE030 |  | Production Check Estimate |  | 30d | 2006-10-17 A | 2006-12-30 A | EK000GE025, EK000PE095, EK000PE065, EK000EB010 | 100% |  | 2006-10-17 | 2006-11-27 |  |  |  | 2006-07-29 | 0 | 0 | 00 | EK | G30 | 000 | GE | G | PS | E |  |  | P16 | Y |  |  | Gen |
| EK000YA888 |  | (TLA-02) Second TLA Payment | milestone | 0d | 2006-10-31 A | 2006-10-31 A | EK000YA000 FF+270d | 100% |  | 2006-12-02 | 2006-12-02 |  |  | EBWK 7 Day No Holidays | 2006-07-29 | 0 | 0 | 00 | XE | 000 | 000 | YA | G | PS | E |  | 2005-08-22 | PM |  | 0 |  | Gen |
| EK000YA833 |  | (EP-33) Issue > 90% ISBL Civil Foundations | milestone | 0d | 2006-11-24 A | 2006-11-24 A | EM02ACV167 FF, EM02DCV167 FF, EM02ECV167 FF, EM02FCV167 FF, EM02JCV167 FF, EM02MCV167 FF, EM02NCV164 FF, EM02YCV133 FF, EMO2YCV124 FF | 100% |  | 2007-01-08 | 2007-01-08 |  |  | EBWK 7 Day No Holidays | 2006-07-29 | 0 | 0 | 00 | EK | 000 | 000 | YA | G | PS | E |  | 2006-07-29 | PM |  |  |  | Gen |
| EK000YA839 |  | (EP-35) Issue >90% OSBL P&ID's For Construction (IFC) | milestone | 0d | 2006-11-24 A | 2006-11-24 A | EM01ASY272 FF, EM01BSY272 FF, EM01DSY272 FF, EM01JSY272 FF, EM01YSY272 FF, EM03ASY272 FF, EM03BSY272 FF, EM03CSY272 FF, EM03DSY272 FF, EM03ESY272 FF, EM03FSY272 FF, EM03YSY272 FF | 100% |  | 2007-01-26 | 2007-01-26 |  |  | EBWK 7 Day No Holidays | 2006-07-29 | 0 | 0 | 00 | EK | 000 | 000 | YA | G | Z | E |  | 2006-09-30 | PM | Y |  |  | Gen |
| EK000YA838 |  | (EP-34) Issue >90% ISBL P&ID's For Construction (IFC) | milestone | 0d | 2006-11-25 A | 2006-11-25 A | EM02ASY272 FF, EM02BSY272 FF, EM02CSY272 FF, EM02DSY272 FF, EM02ESY272 FF, EM02FSY272 FF, EM02GSY272 FF, EM02HSY272 FF, EM02JSY272 FF, EM02KSY272 FF, EM02LSY272 FF, EM02MSY272 FF, EM02NSY272 FF, EM02PSY272 FF, EM02QSY272 FF, EM02YSY272 FF | 100% |  | 2007-01-08 | 2007-01-08 |  |  | EBWK 7 Day No Holidays | 2006-07-29 | 0 | 0 | 00 | EK | 000 | 000 | YA | G | PS | E |  | 2006-09-30 | PM |  |  |  | Gen |
| EK000YA832 |  | (EP-32) Issue OSBL (Units01/03) found./UG pipe work package | milestone | 0d | 2006-11-28 A | 2006-11-28 A | EM01BCV167 FF, EM01DCV167 FF, EM01YCV133 FF, EM01CCV160 FF+10d, EM01GCV160 FF+10d, EM01JPI132 FF, EK000CV045 FF, EM01JPI135 FF+10d, EM01JPI120 SF, EM01JPI132 SF, EM01JPI136 FF+10d | 100% |  | 2007-01-08 | 2007-01-08 |  |  | EBWK 7 Day No Holidays | 2006-07-29 | 0 | 0 | 00 | EK | 000 | 000 | YA | G | PS | E |  | 2006-06-24 | PM |  |  |  | Gen |
| EK000YA500 |  | Issue ISBL Paint & Insulation Work Package |  | 80d | 2006-11-30 A | 2007-04-07 | EK000YA835 FF+30d, EK000YA838 FF+30d | 11% | 71d | 2006-11-30 | 2007-02-17 | 750d | 738d | EBWK 7 Day No Holidays | 2006-07-29 | 0 | 0 | 00 | EK | 000 | 000 | YA | G | PS | E |  | 2007-01-27 |  |  |  |  | Gen |

Notes:
- EK000IM030: P3 Activity Log Info: Actual
- EK000PE015: P3 Activity Log Info: Need prior to issue of any P.O. / Confirm With James Sievert / Need prior to issue of any P.O.
- EK000PK030: P3 Activity Log Info: Vendor Data
- EK000CK080: P3 Activity Log Info: Papers Filed 04 April 05 - Two Mths to / Process
- EK000PM045: P3 Activity Log Info: Engineering & / Procurement
- EK000PE020: P3 Activity Log Info: Add activity for each discipline to load budget / 1wk duration

| ID | WBS | Activity | Type | Duration | Start | Finish | Predecessors | Complete | Planned start | Planned finish | Total float | Free float | Calendar | zData Date | PCA Criticality Index | PCA Duration Sensitivity | user_end_date1 | EB02 - UNIT | EB01 - RESP | EB06 - WORK OP | EB03 - AREA | EB05 - DISCIPLINE | EB07 - REQN | EB10 - KEY | EB04 - CLASS | EB11 - FLAG | EB00 - EPC | Discipl1ne Gorgon | EB17 - Suffix | EB12 - TEMP | user_integer2 |
| --- | --- | --- | --- | --- | --- | --- | --- | --- | --- | --- | --- | --- | --- | --- | --- | --- | --- | --- | --- | --- | --- | --- | --- | --- | --- | --- | --- | --- | --- | --- | --- |
| EK000YA848 |  | (EP-37) Issue >90% ISBL Instrument Location Plans/Wire Lists for Construction (IFC) | milestone | 0d | 2006-12-18 A | 2006-12-18 A | EM020IC128 FF, EM020IC124 FF | 100% | 2006-12-22 | 2006-12-22 |  |  | EBWK 7 Day No Holidays | 2006-07-29 | 0 | 0 | 2007-01-27 | 00 | EK | 000 | 000 | YA | Gen | PM | G | PS | E |  |  |  |  |
| EK000YA040 |  | Engineering 95% Complete | milestone | 0d | 2006-12-29 A | 2006-12-29 A | EK000GE030 FF, EK000YA005 FF, EK000QM005 FF, EK000IM005 FF, EK000IM020 FF, EK000IM025 FF, EK000IM030 FF, EK000IM035 FF, EK000PE025 FF, EK000PE070 FF, EK000PE040 FF, EK000PE060 FF, EK000PE075 FF, EK000PE085 FF, EK000QM020 FF, EK000QM025 FF, EK000PE035 FF, EK000PR080 FF, EK000PI060 FF, EK000PI110 FF, EK000IC020 FF, EK010FP040 FF, EK000FP036 FF, EK000PC020 FF, EM000MCG10 FF, EK020FP460 FF, EK020FP450 FF, EK000ML44B FF, EK000MBG10 FF, EK020EL210 FF, EM02API135 FF, EK020ELEE0 FF, PK01FMU100 FF, PK000MU21N FF, EK000IC005, EK000EL010, EK020ELG40, EM000ELEN3, EK020ELG70, EK020ELEC3, EK010PI014 FF, EK000FP025 FF, EK010PI013 FF, EK020FP490 FF, EK010PI012 FF, EK010FP040 F1, EK010FP060 FF, EK010FP031 FF, EM01ASY172 FF, EK020PI014 FF, EK020PI013 FF, EK020FP500 FF, EK000FP065, EM01JPI138 | 100% | 2007-03-01 | 2007-03-01 |  |  |  | 2006-07-29 | 0 | 0 |  | 00 | EK | 000 | 000 | YA | Gen |  | G |  | E | 040 |  |  |  |
| EK000YA835 |  | (EP-36) Issue >90% Area Line Installation Details | milestone | 0d | 2006-12-30 A | 2006-12-30 A | EM03UPI190 FF, EM05UPI190 FF, EM01API135 FF, EM01BPI135 FF, EM01DPI135 FF, EM01JPI135 FF, EM02API135 FF, EM02BPI135 FF, EM02CPI135 FF, EM02DPI135 FF, EM02EPI135 FF, EM02FPI135 FF, EM02GPI135 FF, EM02HPI135 FF, EM02JPI135 FF, EM02KPI135 FF, EM02LPI135 FF, EM02MPI135 FF, EM02NPI135 FF, EM02PPI135 FF, EM02QPI135 FF, EM02YPI135 FF, EM03API135 FF, EM03BPI135 FF, EM03CPI135 FF, EM03DPI135 FF, EM03EPI135 FF, EM03FPI135 FF, EM03YPI135 FF, EM05API135 FF, EM05BPI135 FF, EM05UPI191 FF | 100% | 2007-03-01 | 2007-03-01 |  |  | EBWK 7 Day No Holidays | 2006-07-29 | 0 | 0 | 2006-08-26 | 00 | EK | 000 | 000 | YA | Gen | PM | G | Z | E |  |  |  |  |
| EK000YA847 |  | (EP-39) Issue >90% OSBL Electrical Design Drawings | milestone | 0d | 2007-01-12 A | 2007-01-12 A | EK000YA835 | 100% | 2007-02-28 | 2007-02-28 |  |  | EBWK 7 Day No Holidays | 2006-07-29 | 0 | 0 | 2006-12-30 | 00 | EK | 000 | 000 | YA | Gen | PM | G | Z | E |  |  |  |  |
| EK020ELEG6 |  | Cathodic Protection - Material Supply (By Consultant) |  | 90d | 2007-01-29 | 2007-06-01 | EK020ELEG5 |  |  |  | 6d | 0d | EBWK - Global | 2006-07-29 | 0 | 0 |  | 00 | PK | EG2 | 000 | U3 |  |  | E |  | P |  | E2B2 |  |  |
| EK000YA030 |  | Last PDS Planning Release | milestone | 0d | 2007-02-23 | 2007-02-23 | EM02LPI132 FF, EM03FPI132 FF, EM02API132 FF, EM02BPI132 FF, EM02DPI132 FF, EM02EPI132 FF, EM02FPI132 FF, EM02GPI132 FF, EM02JPI132 FF, EM02KPI140 FF, EM02MPI132 FF, EM02NPI132 FF, EM02PPI132 FF, EM02QPI132 FF, EM03API132 FF, EM03BPI132 FF, EM03CPI132 FF, EM03DPI132 FF, EM03EPI132 FF, EM03YPI132 FF, EM01API132 FF, EM01BPI132 FF, EM01CPI132 FF, EM01DPI132 FF, EM01JPI132 FF, EM05API132 FF, EM05BPI132 FF, EM01YPI132 FF, EM02CPI132 FF, EM02HPI132 FF, EK000MD020 FF, EK020IC131 |  |  |  | 515d | 557d |  | 2006-07-29 | 0 | 0 |  | 00 | EK | 000 | 000 | YA | Gen |  | G | PS | E |  |  | Y |  |
| EK000YA889 |  | (TLA-03) Complete > TLA Payments | milestone | 0d | 2007-06-02 | 2007-06-02 | EK000YA888 FF+215d, EK000ELEN1, EK000ELEN2, EM020IC129, EM000IC100, EM01JCV133, EM020ELEN1, EM020ELEN2, EM020ELEN3 |  |  |  | 623d | 682d | EBWK 7 Day No Holidays | 2006-07-29 | 0 | 0 | 2005-08-22 | 00 | XE | 000 | 000 | YA | Gen | PM | G |  | E |  |  |  | 0 |
|  | GEN | **General & Admin.** |  |  | 2005-04-04 | 2006-05-29 |  |  |  |  |  |  |  |  |  |  |  |  |  |  |  |  |  |  |  |  |  |  |  |  |  |
| EK000CS030 |  | Start-up Schedule (Prelim for 1st Planner) |  | 10d | 2005-04-04 A | 2005-04-13 A | EK000YA002 SS | 100% | 2005-04-04 | 2005-04-15 |  |  |  | 2006-07-29 | 0 | 0 |  | 00 | SC | G10 | 000 | CS |  |  | G | X | S |  |  |  |  |
| EK000CS025 |  | Turnover System Definition for ISBL |  | 25d | 2005-05-16 A | 2006-03-02 A | EK000SY010, EK020SY050 FF+23d | 100% | 2005-06-21 | 2005-07-27 |  |  |  | 2006-07-29 | 0 | 0 |  | 00 | SC | G10 | 000 | CS |  |  | G | X | S |  |  |  |  |
| EK000CS027 |  | Turnover System Definition for OSBL |  | 25d | 2006-03-27 A | 2006-05-29 A | EK010SY050, EK030SY050, EK050SY050 | 100% | 2006-03-27 | 2006-04-28 |  |  |  | 2006-07-29 | 0 | 0 |  | 00 | SC | 000 | 000 | CS | Gen |  | G | X | S |  |  |  |  |
|  | AR | **Architecture Engineering** |  |  | 2005-02-21 | 2005-05-13 |  |  |  |  |  |  |  |  |  |  |  |  |  |  |  |  |  |  |  |  |  |  |  |  |  |
| EK000AR020 |  | Gather Bldg Requirements & Coordinate w/ Constr |  | 20d | 2005-02-21 A | 2005-05-13 A | EK000YA002 SS | 100% | 2005-03-28 | 2005-04-22 |  |  |  | 2006-07-29 | 0 | 0 |  | 00 | EK | G60 | 000 | AR |  |  | A | X | E |  |  |  |  |
|  | PE | **Project Engineering** |  |  | 2005-02-21 | 2005-09-22 |  |  |  |  |  |  |  |  |  |  |  |  |  |  |  |  |  |  |  |  |  |  |  |  |  |
| EK000PE085 |  | Participate in Escalation confirmation effort |  | 19d | 2005-02-21 A | 2005-03-31 A | EK000PM030 FF, EK000YA002 SS | 100% | 2005-02-21 | 2005-03-17 |  |  |  | 2006-07-29 | 0 | 0 |  | 00 | EK | G10 | 000 | PE |  |  | X | X | E |  |  |  |  |
| EK000PE125 |  | Preliminary Issue - Equipment List |  | 10d | 2005-02-28 A | 2005-03-14 A | EK000YA002 SS | 100% | 2005-02-28 | 2005-03-11 |  |  |  | 2006-07-29 | 0 | 0 |  | 00 | EK | G10 | 000 | PE |  |  | M | X | E |  |  |  |  |
| EK000PE050 |  | Confirm of Split of Work for MEC |  | 16d | 2005-03-04 A | 2005-03-25 A | EK000YA002 SS | 100% |  |  |  |  |  | 2006-07-29 | 0 | 0 |  | 00 | EK | G10 | 000 | PE |  |  | X | X | E |  |  |  |  |
| EK000PE010 |  | Publish Unit conversion standard |  | 10d | 2005-03-07 A | 2005-03-18 A | EK000YA002 SS | 100% |  |  |  |  |  | 2006-07-29 | 0 | 0 |  | 00 | EK | G10 | 000 | PE |  |  | X | X | E |  |  |  |  |
| EK000PE040 |  | Devlop & Issue List of Project Specs & Standards |  | 15d | 2005-03-07 A | 2005-03-18 A | EK000PE110 SS | 100% | 2005-03-07 | 2005-03-25 |  |  |  | 2006-07-29 | 0 | 0 |  | 00 | EK | G10 | 000 | PE |  |  | X | X | E |  |  |  |  |
| EK000PE110 |  | Issue Draft Project Design Data |  | 15d | 2005-03-07 A | 2005-04-05 A | EK000PE010 FF+5d | 100% | 2005-03-07 | 2005-03-25 |  |  |  | 2006-07-29 | 0 | 0 |  | 00 | EK | G10 | 000 | PE |  |  | G | X | E |  |  |  |  |
| EK000PE090 |  | Develop & Issue Engineering Plan |  | 15d | 2005-03-14 A | 2005-04-01 A | EK000YA002 SS+15d | 100% |  |  |  |  |  | 2006-07-29 | 0 | 0 |  | 00 | EK | G10 | 000 | PE |  |  | X | X | E |  |  |  |  |
| EK000PE060 |  | Define Task Force Area in MEC |  | 5d | 2005-03-28 A | 2005-03-30 A | EK000PE050 | 100% | 2005-03-28 | 2005-04-01 |  |  |  | 2006-07-29 | 0 | 0 |  | 00 | EK | G10 | 000 | PE |  |  | X | X | E |  |  |  |  |
| EK000PE075 |  | MEC Organization Chart |  | 5d | 2005-03-28 A | 2005-03-30 A | EK000PE050 | 100% | 2005-03-28 | 2005-04-01 |  |  |  | 2006-07-29 | 0 | 0 |  | 00 | EK | G10 | 000 | PE |  |  | X | X | E |  |  |  |  |
| EK000PE070 |  | Kick-off meeting at MEC |  | 2d | 2005-09-21 A | 2005-09-22 A | EK000PE050, EK000PS010, EK000PS030, EK000PS040, EK000EB015 | 100% |  |  |  |  |  | 2006-07-29 | 0 | 0 |  | 00 | EK | G10 | 000 | PE |  |  | X |  | E |  |  |  |  |

Notes:
- EK000PE110: P3 Activity Log Info: Actual

| ID | WBS | Activity | Duration | Start | Finish | Predecessors | Complete | Planned start | Planned finish | zData Date | PCA Criticality Index | PCA Duration Sensitivity | EB02 - UNIT | EB01 - RESP | EB06 - WORK OP | EB03 - AREA | EB05 - DISCIPLINE | EB04 - CLASS | EB11 - FLAG | EB00 - EPC | EB12 - TEMP | EB17 - Suffix | Discipl1ne Gorgon | EB07 - REQN |
| --- | --- | --- | --- | --- | --- | --- | --- | --- | --- | --- | --- | --- | --- | --- | --- | --- | --- | --- | --- | --- | --- | --- | --- | --- |
|  | PS | **Planning & Scheduling** |  |  |  |  |  |  |  |  |  |  |  |  |  |  |  |  |  |  |  |  |  |  |
|  | QM | **Quality Mgmt.** |  |  |  |  |  |  |  |  |  |  |  |  |  |  |  |  |  |  |  |  |  |  |
|  | CE | **Chief Engineering** |  |  |  |  |  |  |  |  |  |  |  |  |  |  |  |  |  |  |  |  |  |  |
|  | CV | **Civil Engineering** |  | 2005-02-22 | 2006-04-14 |  |  |  |  |  |  |  |  |  |  |  |  |  |  |  |  |  |  |  |
| EK000CV005 |  | Identify scope / Project set-up | 25d | 2005-02-22 A | 2005-03-25 A | EK000YA002 SS | 100% | 2005-02-22 | 2005-03-28 | 2006-07-29 | 0 | 0 | 00 | EK | G10 | 000 | CV | G | X | E |  |  |  |  |
| EK000CV020 |  | Review FMCL documents - Specs & Drawings | 15d | 2005-02-28 A | 2005-03-18 A | EK000YA002 SS | 100% |  |  | 2006-07-29 | 0 | 0 | 00 | EK | G20 | 000 | CV | G | X | E |  |  |  |  |
| EK000CV025 |  | Review SEGAS Wind & Earthquake Specs | 11d | 2005-03-07 A | 2005-03-21 A | EK000CV020 FF, EK000YA002 SS | 100% |  |  | 2006-07-29 | 0 | 0 | 00 | EK | G20 | 000 | CV | G | X | E |  |  |  |  |
| EK000CV010 |  | HOC / MEC split of Work | 15d | 2005-03-09 A | 2005-03-18 A | EK000PE090 FF+2d | 100% | 2005-03-09 | 2005-03-29 | 2006-07-29 | 0 | 0 | 00 | EK | G10 | 000 | CV | C | X | E |  |  |  |  |
| EK000CV030 |  | Prepare EBIC Wind & EarthquakeSpecs | 14d | 2005-03-09 A | 2005-03-28 A | EK000CV025 SS+2d | 100% |  |  | 2006-07-29 | 0 | 0 | 00 | EK | G20 | 000 | CV | G | X | E |  |  |  |  |
| EK000CV015 |  | Civil work Plan & Safety check list | 15d | 2005-03-14 A | 2005-04-15 A | EK000PE090 FF+5d | 100% | 2005-03-14 | 2005-04-01 | 2006-07-29 | 0 | 0 | 00 | EK | G10 | 000 | CV | G | X | E |  |  |  |  |
| EK000CV040 |  | Prepare Topo Survey S/C Pkg | 10d | 2005-03-14 A | 2005-03-25 A | EK000YA002 SS+15d | 100% |  |  | 2006-07-29 | 0 | 0 | 00 | EK | K10 | 000 | CV | K | X | E |  |  |  |  |
| EK000CV050 |  | Prepare EBIC Class 'C' & 'S' Spec - FMCL Basis | 20d | 2005-03-14 A | 2005-04-15 A | EK000YA002 SS+15d | 100% | 2005-03-14 | 2005-04-08 | 2006-07-29 | 0 | 0 | 00 | EK | G20 | 000 | CV | G | X | E |  |  |  |  |
| EK000CV070 |  | Validate Concrete & Steel by Planning Areas | 15d | 2005-03-21 A | 2005-05-16 A | EK000PE125 FF+5d | 100% | 2005-03-21 | 2005-04-08 | 2006-07-29 | 0 | 0 | 00 | EK | G10 | 000 | CV | C | X | E |  |  |  |  |
| EK000CV035 |  | Prepare Geotech S/C Pkgs | 15d | 2005-03-28 A | 2005-05-27 A | EK030PI005 FF+5d, EK050PI005 FF+5d | 100% | 2005-03-28 | 2005-04-15 | 2006-07-29 | 0 | 0 | 00 | EK | K10 | 000 | CV | K | X | E | S1 | E2B2 |  |  |
| EK000CV060 |  | Civil project highlights | 10d | 2005-03-28 A | 2005-04-15 A | EK000CV030 FF, EK000CV050 FF | 100% | 2005-03-28 | 2005-04-08 | 2006-07-29 | 0 | 0 | 00 | EK | G10 | 000 | CV | G | X | E |  |  |  |  |
| EK000CV075 |  | Egyptian Professional Engineer - Define Reqmnts | 10d | 2005-04-04 A | 2005-04-07 A | EK000CV010, EK000YA002 SS+29d | 100% | 2005-04-04 | 2005-04-15 | 2006-07-29 | 0 | 0 | 00 | EK | G10 | 000 | CV | G | X | E |  |  |  |  |
| EK000CV080 |  | Egyptian Professional Eng. - Issue P.O/Subc. Pkg | 5d | 2005-04-07 A | 2005-04-08 A | EK000CV060, EK000CV075 FF | 100% | 2005-04-07 | 2005-04-13 | 2006-07-29 | 0 | 0 | 00 | EK | G10 | 000 | CV | G | X | E |  |  |  |  |
| EK000CVK35 |  | OSBL Rough Grading/Road | 20d | 2005-04-27 A | 2005-06-23 A | EK000CV136 SS | 100% | 2005-06-27 | 2005-07-26 | 2006-07-29 | 0 | 0 | 00 | EK | K30 | 000 | CV | K | WE | E |  |  | K30 |  |
| EK000CV036 |  | Issue Geotech S/C PKG | 5d | 2005-05-27 A | 2005-06-02 A | EK000CV035 | 100% | 2005-05-31 | 2005-06-06 | 2006-07-29 | 0 | 0 | 00 | EK | K10 | 000 | CV | K | X | E | S1 | E2B2 |  |  |
| EK000CV140 |  | Issue Site Survey S/C PKG | 5d | 2005-05-27 A | 2005-06-14 A | EK000CV035 FF | 100% | 2005-05-31 | 2005-06-06 | 2006-07-29 | 0 | 0 | 00 | EK | K10 | 000 | CV | K | X | E |  | E2B2 |  |  |
| EK000CV145 |  | Issue Site Leveling PKG | 5d | 2005-05-27 A | 2005-06-16 A | EK000CV035 FF | 100% | 2005-05-31 | 2005-06-06 | 2006-07-29 | 0 | 0 | 00 | EK | K10 | 000 | CV | K | X | E |  | E2B2 |  |  |
| EK000CV136 |  | Issue Rough Grade (Ammonia) S/C PKG | 5d | 2005-05-31 A | 2005-06-27 A | EK000CV035 FF | 100% | 2005-05-31 | 2005-06-06 | 2006-07-29 | 0 | 0 | 00 | EK | K10 | 000 | CV | C | X | E |  |  |  |  |
| EK000CV065 |  | Review Perimeter Wall Design - IFC (by OCI) | 20d | 2005-06-20 A | 2005-07-15 A | EK000CV050, EK000EV020 SS+10d | 100% | 2005-08-02 | 2005-08-29 | 2006-07-29 | 0 | 0 | 00 | EK | C20 | 000 | CV | C | X | E |  |  |  |  |
| EK000CV165 |  | Issue ISBL Rough Grade Design Pkg. | 30d | 2005-09-08 A | 2005-11-04 A | EK000CVK35 FF | 100% | 2005-09-08 | 2005-10-19 | 2006-07-29 | 0 | 0 | 00 | EK | K10 | 000 | CV | C | X | E |  |  |  |  |
| EK000CV137 |  | Issue OSBL Rough Grade Design Pkg. | 23d | 2005-10-11 A | 2005-12-27 A | EK000CV136 | 100% | 2005-10-11 | 2005-11-10 | 2006-07-29 | 0 | 0 | 00 | EK | K10 | 000 | CV | C | X | E |  |  |  |  |
| EK000CV045 |  | Prepare Foundation Design Criteria | 10d | 2006-02-16 A | 2006-04-14 A | EK000CV035 FS+20d, EK000CV080, EK000CV039 | 100% | 2006-02-27 | 2006-03-13 | 2006-07-29 | 0 | 0 | 00 | EK | G20 | 000 | CV | C | X | E | S1 |  |  | Found |

Notes:
- EK000CV040: P3 Activity Log Info: Construction to supply desired constr monuments
- EK000CV065: P3 Activity Log Info: Gates & access points, lighting / layout

| ID | WBS | Activity | Duration | Start | Finish | Predecessors | Complete | Remaining | Planned start | Planned finish | Total float | Free float | Constraint | Expected finish | Calendar | zData Date | PCA Criticality Index | PCA Duration Sensitivity | EB02 - UNIT | EB01 - RESP | EB06 - WORK OP | EB03 - AREA | EB05 - DISCIPLINE | EB04 - CLASS | EB11 - FLAG | EB00 - EPC | EB17 - Suffix | EB12 - TEMP | EB07 - REQN | EB10 - KEY | EB09 - IPMS | Optimistic Duration | Most Likely Duration | Pessimistic Duration | EB21 - Rev 2 Risk Associations | user_integer1 | user_text1 |
| --- | --- | --- | --- | --- | --- | --- | --- | --- | --- | --- | --- | --- | --- | --- | --- | --- | --- | --- | --- | --- | --- | --- | --- | --- | --- | --- | --- | --- | --- | --- | --- | --- | --- | --- | --- | --- | --- |
|  | EL | **Electrical Engineering** |  | 2005-03-14 | 2007-03-30 |  |  |  |  |  |  |  |  |  |  |  |  |  |  |  |  |  |  |  |  |  |  |  |  |  |  |  |  |  |  |  |  |
| EK000ELZE0 |  | Area Classification | 300d | 2005-03-14 A | 2006-01-30 A | EK010SY010 FF | 100% |  | 2006-01-30 | 2007-03-23 |  |  |  |  | EBWK - Global | 2006-07-29 | 0 | 0 | 00 | EK | ZE0 | 000 | EL | E | WE | E | E2B2 |  |  |  |  |  |  |  |  |  |  |
| EK000EL005 |  | Electrical Work Plans | 15d | 2005-03-14 A | 2005-04-08 A | EK000PE090 FF+5d | 100% |  | 2005-03-14 | 2005-04-01 |  |  |  |  |  | 2006-07-29 | 0 | 0 | 00 | EK | G10 | 000 | EL | G | X | E |  |  |  |  |  |  |  |  |  |  |  |
| EK000EL020 |  | Define bulk material requirements | 5d | 2005-03-21 A | 2005-03-25 A | EK000YA002 SS+20d | 100% |  |  |  |  |  |  |  |  | 2006-07-29 | 0 | 0 | 00 | EK | G30 | 000 | EL | E | X | E |  |  |  |  |  |  |  |  |  |  |  |
| EK000EL015 |  | Split of work with MEC and Other Discipline | 5d | 2005-03-28 A | 2005-03-30 A | EK000EL005 SS+5d | 100% |  | 2005-03-28 | 2005-04-01 |  |  |  |  |  | 2006-07-29 | 0 | 0 | 00 | EK | G10 | 000 | EL | G | X | E |  |  |  |  |  |  |  |  |  |  |  |
| EK000EL025 |  | Develop installation details | 40d | 2005-03-28 A | 2005-06-06 A | EK000EL020 | 100% |  | 2005-03-28 | 2005-05-20 |  |  |  |  |  | 2006-07-29 | 0 | 0 | 00 | EK | EK1 | 000 | EL | E | X | E |  |  |  |  |  |  |  |  |  |  |  |
| EK000EL035 |  | Voltage drop table | 5d | 2005-04-04 A | 2005-04-08 A | EK000EL030 | 100% |  |  |  |  |  |  |  |  | 2006-07-29 | 0 | 0 | 00 | EK | EC2 | 000 | EL | E | X | E |  |  |  |  |  |  |  |  |  |  |  |
| EK020ELEG2 |  | Cathodic Protection - Subcontract Consultant ERW Package | 45d | 2005-11-09 A | 2006-03-31 A | EK000YA002 | 100% |  | 2006-01-30 | 2006-03-31 |  |  |  |  | EBWK - Global | 2006-07-29 | 0 | 0 | 00 | EK | EG2 | 000 | EL | E |  | E | E2B2 | Y |  |  |  |  |  |  |  |  |  |
| EK000E001A |  | Sub Stations - Issue ERW | 15d | 2005-12-22 A | 2006-01-31 A | EK020ELED0 | 100% |  | 2005-12-22 | 2006-01-16 |  |  |  |  |  | 2006-07-29 | 0 | 0 | 00 | EK | EF1 | 000 | EL | E |  | E |  |  | E0001 | ER | A |  |  |  |  |  |  |
| EK000E002A |  | Transformer - Issue ERW | 10d | 2006-01-17 A | 2006-01-30 A | EK000E001A FF | 100% |  |  |  |  |  |  |  |  | 2006-07-29 | 0 | 0 | 00 | EK | EF5 | 000 | EL | E |  | E |  |  | E0002 | ER | A |  |  |  |  |  |  |
| EK000ELEJ1 |  | Lighting, Installation Details | 1d | 2006-01-28 A | 2006-01-30 A | EK010PI012 | 100% |  | 2006-01-30 | 2006-01-30 |  |  |  |  | EBWK - Global | 2006-07-29 | 0 | 0 | 00 | EK | EJ1 | 000 | EL | E | WE | E | E2B2 |  |  |  |  |  |  |  |  |  |  |
| EK000ELEK1 |  | A/G Power & Control, Details | 1d | 2006-01-28 A | 2006-01-30 A | EK010SY090 | 100% |  | 2006-01-30 | 2006-01-30 |  |  |  |  | EBWK - Global | 2006-07-29 | 0 | 0 | 00 | EK | EK1 | 000 | EL | E | WE | E | E2B2 |  |  |  |  |  |  |  |  |  |  |
| EK010E008A |  | 540-SB Admin. Area Pwr Supply - ERW Package | 25d | 2006-03-03 A | 2006-03-17 A | EK01FSY170 | 100% |  | 2006-03-03 | 2006-04-06 |  |  |  |  |  | 2006-07-29 | 0 | 6.5 | 00 | EK | EF5 | 000 | EL | E |  | E | E1B1 | Y | E0008 |  |  | 3 | 5 | 7 | 03 |  |  |
| EK000E004A |  | UPS System - Issue ERW | 10d | 2006-03-20 A | 2006-04-27 A | EK000E001A FF | 100% |  | 2006-03-27 | 2006-04-07 |  |  |  |  |  | 2006-07-29 | 7.6 | 2 | 00 | EK | EF6 | 000 | EL | E | CD | E |  |  | E0004 | ER | A | 8 | 10 | 12 | 03 | 26 |  |
| EK000E001D |  | Sub Stations - Tech Evaluation | 10d | 2006-03-22 A | 2006-05-26 A | PK000E001C | 100% |  | 2006-03-16 | 2006-03-29 |  |  |  |  |  | 2006-07-29 | 0 | 0 | 00 | EK | EF1 | 000 | EL | E | CD | E |  |  | E0001 |  | D | 15 | 20 | 30 | 03 | 10 |  |
| EK000E002D |  | Transformer - Tech Evaluation | 10d | 2006-04-04 A | 2006-06-13 A | PK000E002C | 100% |  | 2006-04-10 | 2006-04-21 |  |  |  |  |  | 2006-07-29 | 0 | 1.7 | 00 | EK | EF5 | 000 | EL | E |  | E |  |  | E0002 |  | D | 5 | 10 | 15 | 03 |  |  |
| EK010E008D |  | 540-SB Admin. Area Pwr Supply - Tech Evaluation | 10d | 2006-05-04 A | 2006-06-30 A | PK010E008C | 100% |  | 2006-05-01 | 2006-05-12 |  |  |  |  |  | 2006-07-29 | 0 | 0 | 00 | EK | EF5 | 000 | EL | E |  | E |  |  | E0008 |  | D | 7 | 10 | 15 | 03 |  | On Hold Per Witold/Jim W. - Has been deleted per Witold B. |
| EK000E004D |  | UPS System - Tech Evaluation | 10d | 2006-06-21 A | 2006-07-28 A | PK000E00C | 100% |  | 2006-06-21 | 2006-07-04 |  |  |  |  |  | 2006-07-29 | 7.6 | 0 | 00 | EK | EF6 | 000 | EL | E |  | E |  |  | E0004 |  | D | 8 | 10 | 12 | 03 |  |  |
| PK000E001J |  | Sub Stations - Planning V. Data | 20d | 2006-07-04 A | 2006-09-27 A | PK000E001G | 100% |  | 2006-09-18 | 2006-10-13 |  |  |  |  |  | 2006-07-29 | 0 | 2.2 | 00 | EK | EF1 | 000 | EL | E |  | E |  |  | E0001 | P15 | J | 40 | 45 | 50 | 06 |  |  |
| EK000ELEG0 |  | Electrical Heat Tracing - ERW Package | 25d | 2006-07-18 A | 2006-08-31 A | EM03CPI135 SS+20d | 100% |  | 2006-07-24 | 2006-08-25 |  |  |  |  |  | 2006-07-29 | 0 | 0 | 00 | EK | E00 | 000 | EL | E |  | E | E1B1 |  | E0009 |  |  |  |  |  |  |  |  |
| PK000E002J |  | Transformer - Planning V. Data | 20d | 2006-08-03 A | 2006-09-27 A | PK000E002G | 100% |  | 2006-08-07 | 2006-09-01 |  |  |  |  |  | 2006-07-29 | 0 | 0 | 00 | EK | EF5 | 000 | EL | E |  | E |  |  | E0002 | P15 | J | 15 | 20 | 25 | 06 |  |  |
| PK000E004J |  | UPS System - Planning V. Data | 20d | 2006-08-18 A | 2006-11-10 A | PK000E004G | 100% |  | 2006-08-10 | 2006-09-06 |  |  |  |  |  | 2006-07-29 | 0 | 1.8 | 00 | EK | EF6 | 000 | EL | E |  | E |  |  | E0004 | P15 | J | 10 | 20 | 25 | 06 |  |  |
| EK000ELEGP |  | Electrical Heat Tracing - Design & BOM by Consultant | 25d | 2006-10-26 A | 2007-03-01 | EK000ELEG0 FS+25d | 4% | 24d | 2006-10-30 | 2006-12-01 | 91d | 0d | start on or after 2006-10-30 | 2007-03-01 |  | 2006-07-29 | 0 | 0 | 00 | EK | E00 | 000 | EL | E |  | E | E1B1 |  | E0009 |  |  |  |  |  |  |  |  |
| EK000ELEN3 |  | 01,03, Equipment Interconnection Diagrams - IFC | 120d | 2006-10-27 A | 2007-03-01 | PK000EL000 | 80% | 24d | 2006-10-27 | 2007-04-12 | 511d | 0d |  |  | EBWK - Global | 2006-07-29 | 13.1 | 0 | 00 | EK | EN3 | 000 | EL | E | PS | E | E2B2 |  |  | E1 |  | 80 | 95 | 100 |  |  |  |
| EK000ELEN1 |  | 01,03,04 LV Wiring Diagrams - IFC | 30d | 2006-11-13 A | 2007-03-05 | EM000ELEK2 FF, EK100ELEK2 FF, EK200ELEK2 FF | 13% | 26d | 2006-11-13 | 2006-12-22 | 509d | 0d |  | 2007-03-05 | EBWK - Global | 2006-07-29 | 0 | 0 | 00 | EK | EN1 | 000 | EL | E | PS | E | E2B2 |  |  | E1 |  |  |  |  |  |  |  |
| EK000ELEN2 |  | 01,03,04 LV//MV WIRING DIAGRAMS & CTL SCHEMATICS - IFC | 30d | 2006-11-13 A | 2007-03-05 | EM000ELEK2 FF, EK100ELEK2 FF, EK200ELEK2 FF | 13% | 26d | 2006-11-13 | 2006-12-22 | 509d | 0d |  | 2007-03-05 | EBWK - Global | 2006-07-29 | 0 | 0 | 00 | EK | EN2 | 000 | EL | E | PS | E | E2B2 |  |  | E1 |  |  |  |  |  |  |  |
| PK010E008J |  | 540-SG Admin. Area Pwr Supply - Planning V. Data | 20d | 2006-12-04 A | 2006-12-11 A | PK010E008G | 100% |  | 2006-12-04 | 2007-01-01 |  |  | start on or after 2006-11-15 |  |  | 2006-07-29 | 0 | 1.9 | 00 | EK | EF5 | 000 | EL | E |  | E |  |  | E0008 | P15 | J | 15 | 20 | 30 | 06 |  |  |
| PK000E001Z |  | Sub Stations - FAT | 5d | 2007-03-19 | 2007-03-30 | PK000E001H FF, PK000E001H SS+40d |  |  | 2007-03-19 | 2007-03-23 | 62d | 0d |  |  |  | 2006-07-29 | 0 | 0 | 00 | EK | EF1 | 000 | EL | E | CD | E |  |  | E0001 |  | H | 5 | 10 | 15 | 03 | 5 |  |

Notes:
- EK000EL015: P3 Activity Log Info: Actual

| ID | WBS | Activity | Duration | Start | Finish | Predecessors | Complete | Planned start | Planned finish | zData Date | PCA Criticality Index | PCA Duration Sensitivity | EB02 - UNIT | EB01 - RESP | EB06 - WORK OP | EB03 - AREA | EB05 - DISCIPLINE | EB04 - CLASS | EB11 - FLAG | EB00 - EPC | EB07 - REQN | EB09 - IPMS | Optimistic Duration | Most Likely Duration | Pessimistic Duration | EB10 - KEY | EB21 - Rev 2 Risk Associations | user_integer2 | EB14 - RISK | user_text1 |
| --- | --- | --- | --- | --- | --- | --- | --- | --- | --- | --- | --- | --- | --- | --- | --- | --- | --- | --- | --- | --- | --- | --- | --- | --- | --- | --- | --- | --- | --- | --- |
|  | EV | **Environmental Engineering** |  | 2005-03-21 | 2005-06-30 |  |  |  |  |  |  |  |  |  |  |  |  |  |  |  |  |  |  |  |  |  |  |  |  |  |
| EK000EV005 |  | Conceptual Design of Wastewater Systems | 25d | 2005-03-21 A | 2005-04-22 A | EK000PR070 FF+1d, EK000SY015 FF | 100% |  |  | 2006-07-29 | 0 | 0 | 00 | EK | R10 | 000 | EV | X | X | E |  |  |  |  |  |  |  |  |  |  |
| EK000EV025 |  | Develop & Issue Enviromental Work Plan | 10d | 2005-03-28 A | 2005-04-08 A | EK000PE090 FF+5d | 100% |  |  | 2006-07-29 | 0 | 0 | 00 | EK | G10 | 000 | EV | X | X | E |  |  |  |  |  |  |  |  |  |  |
| EK000EV020 |  | Develop Preliminary noise model | 15d | 2005-04-11 A | 2005-05-20 A | EK020PI010, EK030PI005, EK010PI005, EK050PI005 | 100% | 2005-04-11 | 2005-04-29 | 2006-07-29 | 0 | 0 | 00 | EK | EV3 | 000 | EV | X | X | E |  |  |  |  |  |  |  |  |  |  |
| EK000EV010 |  | Develop design basis for evaporation pond | 15d | 2005-04-21 A | 2005-06-10 A | EK000PR070 FS+1d | 100% | 2005-04-21 | 2005-05-11 | 2006-07-29 | 0 | 0 | 00 | EK | R10 | 000 | EV | X | X | E |  |  |  |  |  |  |  |  |  |  |
| EK000EV015 |  | Issue load sheets for wastewater systems | 20d | 2005-05-20 A | 2005-06-30 A | EK000EV005 | 100% | 2005-05-20 | 2005-06-17 | 2006-07-29 | 0 | 0 | 00 | EK | R10 | 000 | EV | X | X | E |  |  |  |  |  |  |  |  |  |  |
|  | FP | **Fire Protection Engineering** |  |  |  |  |  |  |  |  |  |  |  |  |  |  |  |  |  |  |  |  |  |  |  |  |  |  |  |  |
|  | GE | **General Engineering (All Disciplines)** |  |  |  |  |  |  |  |  |  |  |  |  |  |  |  |  |  |  |  |  |  |  |  |  |  |  |  |  |
|  | IC | **Control Sytems Engineering** |  | 2005-02-21 | 2006-10-27 |  |  |  |  |  |  |  |  |  |  |  |  |  |  |  |  |  |  |  |  |  |  |  |  |  |
| EK000IC030 |  | Develop & Issue FieldBus Main Instr Vendor ERW | 20d | 2005-02-21 A | 2005-04-07 A | EK000YA002 SS | 100% | 2005-02-21 | 2005-03-18 | 2006-07-29 | 0 | 0 | 00 | EK | I35 | 000 | IC | I | X | E | I3511 | A |  |  |  |  |  |  |  |  |
| EK000IC35A |  | DCS - Engr ERW Issued | 3d | 2005-03-07 A | 2005-03-15 A | EK000YA002 SS | 100% | 2005-04-22 | 2005-04-26 | 2006-07-29 | 0 | 0 | 00 | EK | I35 | 000 | IC | I | X | E | I3510 | A |  |  |  |  |  |  |  |  |
| EK000IC015 |  | Modify Package Equipment Spec for IEC basis | 10d | 2005-03-07 A | 2005-04-04 A | EK000YA002 SS+10d | 100% | 2005-03-07 | 2005-03-18 | 2006-07-29 | 0 | 0 | 00 | EK | G20 | 000 | IC | I | X | E |  |  |  |  |  |  |  |  |  |  |
| EK000IC005 |  | Develop Typical SIL Values Worksheet | 10d | 2005-03-21 A | 2005-04-01 A | EK000YA002 SS+15d | 100% |  |  | 2006-07-29 | 0 | 0 | 00 | EK | I35 | 000 | IC | I | X | E |  |  |  |  |  |  |  |  |  |  |
| EK000IC020 |  | Establlish data warehouse - Intools Basic Setup | 5d | 2005-03-28 A | 2005-04-08 A | EK000IC045 SS | 100% | 2005-03-28 | 2005-04-01 | 2006-07-29 | 0 | 0 | 00 | EK | G10 | 000 | IC | I | X | E |  |  |  |  |  |  |  |  |  |  |
| EK000IC025 |  | Review Instr. & Installation Details - ID Change | 0d | 2005-03-28 A | 2005-04-08 A | EK000IC030 | 100% | 2005-03-28 | 2005-03-28 | 2006-07-29 | 0 | 0 | 00 | EK | ID2 | 000 | IC | I | X | E |  |  |  |  |  |  |  |  |  |  |
| EK000IC045 |  | Develop & Issue CSE Work Plan | 10d | 2005-03-28 A | 2005-06-08 A | EK000PE090 FF+5d | 100% | 2005-03-28 | 2005-04-08 | 2006-07-29 | 0 | 0 | 00 | EK | G10 | 000 | IC | I | X | E |  |  |  |  |  |  |  |  |  |  |
| EK000IC35D |  | DCS - Tech Evaluation | 10d | 2005-04-14 A | 2005-06-14 A | PK000IC35C | 100% | 2005-06-09 | 2005-06-22 | 2006-07-29 | 0 | 0 | 00 | EK | I35 | 000 | IC | I | X | E | I3510 | D |  |  |  |  |  |  |  |  |
| EK000I210D |  | 000 Control Valves - Technical Evaluation | 5d | 2005-04-20 A | 2005-06-23 A | PK000I210C | 100% | 2005-07-05 | 2005-07-11 | 2006-07-29 | 0 | 0 | 00 | EK | I22 | 000 | IC | I |  | E | I2210 | D |  |  |  |  |  |  |  |  |
| EK000I131D |  | Technical Evaluation - Transmitters | 5d | 2005-04-26 A | 2005-06-23 A | PK000I131C | 100% | 2005-07-05 | 2005-07-11 | 2006-07-29 | 0 | 0 | 00 | EK | I13 | 000 | IC | I |  | E | I1310 | D |  |  |  |  |  |  |  |  |
| EK000IC36D |  | DCS (MIV) - Tech Evaluation | 10d | 2005-05-16 A | 2005-06-17 A | PK000IC36C | 100% | 2005-05-31 | 2005-06-13 | 2006-07-29 | 0 | 0 | 00 | EK | I35 | 000 | IC | I | X | E | I3511 | D |  |  |  |  |  |  |  |  |
| EK000IC010 |  | Make decision of FF vs. Traditional DCS system | 9d | 2005-05-31 A | 2005-06-17 A | EK000IC030, EK000IC36D FF, EK000IC35D FF | 100% | 2005-05-31 | 2005-06-10 | 2006-07-29 | 0 | 0 | 00 | EK | I35 | 000 | IC | I | X | E |  |  |  |  |  |  |  |  |  |  |
| EK000I220A |  | Issue Preliminary ERW Pkg - MOV Valves | 10d | 2005-06-13 A | 2005-06-30 A | EK020SY050 FF+4d, EK010SY030, EK030SY030, EK050SY030 | 100% | 2005-06-03 | 2005-06-16 | 2006-07-29 | 0 | 0 | 00 | EK | I22 | 000 | IC | I |  | E | I2220 | A |  |  |  |  |  |  |  |  |
| EK000I354A |  | ITCC - Engr ERW Issued | 25d | 2005-06-13 A | 2005-08-22 A | EK000YA002 SS, EK020SY050 FS+4d | 100% | 2005-06-27 | 2005-08-02 | 2006-07-29 | 0 | 0 | 00 | EK | I35 | 000 | IC | I | X | E | I3542 | A |  |  |  |  |  |  |  |  |
| EK000I110D |  | Technical Evaluation - Orific Plates | 6d | 2005-06-27 A | 2005-07-11 A | PK000I110C | 100% | 2005-06-27 | 2005-07-06 | 2006-07-29 | 0 | 0 | 00 | EK | I21 | 000 | IC | I |  | E | I2110 | D |  |  |  |  |  |  |  |  |
| EK000I115D |  | Technical Evaluation - Annubars | 6d | 2005-06-27 A | 2005-07-11 A | PK000I115C | 100% | 2005-06-27 | 2005-07-06 | 2006-07-29 | 0 | 0 | 00 | EK | I21 | 000 | IC | I |  | E | I2115 | D |  |  |  |  |  |  |  |  |
| EK000I116D |  | Technical Evaluation - Wedge Flow Meters | 6d | 2005-06-27 A | 2005-07-11 A | PK000I116C | 100% | 2005-06-27 | 2005-07-06 | 2006-07-29 | 0 | 0 | 00 | EK | I21 | 000 | IC | I |  | E | I2116 | D |  |  |  |  |  |  |  |  |
| EK000I121D |  | Technical Evaluation - Vortex Meters | 13d | 2005-06-27 A | 2005-07-11 A | PK000I121C | 100% | 2005-06-27 | 2005-07-15 | 2006-07-29 | 0 | 0 | 00 | EK | I21 | 000 | IC | I |  | E | I2121 | D |  |  |  |  |  |  |  |  |
| EK000I122D |  | Technical Evaluation - Coriolis Meters | 18d | 2005-06-27 A | 2005-07-11 A | PK000I122C | 100% | 2005-06-27 | 2005-07-22 | 2006-07-29 | 0 | 0 | 00 | EK | I21 | 000 | IC | I |  | E | I2122 | D |  |  |  |  |  |  |  |  |
| EK000I124D |  | Technical Evaluation - Rotameters | 18d | 2005-06-27 A | 2005-07-11 A | PK000I124C | 100% | 2005-06-27 | 2005-07-22 | 2006-07-29 | 0 | 0 | 00 | EK | I21 | 000 | IC | I |  | E | I2124 | D |  |  |  |  |  |  |  |  |
| EK000I127D |  | Magnetic Flow Meters - Technical Evaluation | 24d | 2005-06-27 A | 2005-07-27 A | PK000I127C | 100% | 2005-06-27 | 2005-08-01 | 2006-07-29 | 0 | 0 | 00 | EK | I21 | 000 | IC | I |  | E | I2127 | D |  |  |  |  |  |  |  |  |
| EK000I611D |  | Technical Evaluation - Pressure Gauges | 8d | 2005-06-27 A | 2005-07-11 A | PK000I611C | 100% | 2005-06-27 | 2005-07-08 | 2006-07-29 | 0 | 0 | 00 | EK | I16 | 000 | IC | I |  | E | I1611 | D |  |  |  |  |  |  |  |  |
| EK000I612D |  | Technical Evaluation - Differential Pressure Gauges | 8d | 2005-06-27 A | 2005-07-11 A | PK000I612C | 100% | 2005-06-27 | 2005-07-08 | 2006-07-29 | 0 | 0 | 00 | EK | I16 | 000 | IC | I |  | E | I1612 | D |  |  |  |  |  |  |  |  |
| EK000I616D |  | Technical Evaluation - Steam Drum Lvl Gauges | 8d | 2005-06-27 A | 2005-07-11 A | PK000I616C | 100% | 2005-06-27 | 2005-07-08 | 2006-07-29 | 0 | 0 | 00 | EK | I16 | 000 | IC | I |  | E | I1616 | D |  |  |  |  |  |  |  |  |
| EK000I617D |  | Technical Evaluation - Magnetic Lvl Gauges | 8d | 2005-06-27 A | 2005-07-11 A | PK000I617C | 100% | 2005-06-27 | 2005-07-08 | 2006-07-29 | 0 | 0 | 00 | EK | I16 | 000 | IC | I |  | E | I1617 | D |  |  |  |  |  |  |  |  |
| EK000I230A |  | Issue Preliminary ERW Pkg - On/Off Valves | 9d | 2005-07-05 A | 2005-07-15 A | EK000I220A | 100% |  |  | 2006-07-29 | 0 | 0 | 00 | EK | I22 | 000 | IC | I |  | E | I2230 | B |  |  |  |  |  |  |  |  |
| EK000I112D |  | Technical Evaluation - Venturis | 5d | 2005-07-11 A | 2005-07-15 A | PK000I112C | 100% | 2005-08-29 | 2005-09-02 | 2006-07-29 | 0 | 0 | 00 | EK | I21 | 000 | IC | I |  | E | I2112 | D |  |  |  |  |  |  |  |  |
| EK000I221D |  | 000 Everest Control Valves - Technical Evaluation | 5d | 2005-07-26 A | 2005-08-10 A | PK000I221C | 100% | 2005-10-24 | 2005-10-28 | 2006-07-29 | 0 | 0 | 00 | EK | I22 | 000 | IC | I |  | E | I2211 | D |  |  |  |  |  |  |  |  |
| EK000I220D |  | Technical Evaluation - MOV's | 11d | 2005-08-16 A | 2005-08-23 A | PK000I220C | 100% | 2005-08-29 | 2005-09-12 | 2006-07-29 | 0 | 0 | 00 | EK | I22 | 000 | IC | I |  | E | I2220 | D |  |  |  |  |  |  |  |  |
| EK000I230D |  | Technical Evaluation - On/Off Valves | 10d | 2005-08-17 A | 2005-08-24 A | PK000I230C | 100% | 2005-08-29 | 2005-09-09 | 2006-07-29 | 0 | 0 | 00 | EK | I22 | 000 | IC | I |  | E | I2230 | D |  |  |  |  |  |  |  |  |
| EK000I352A |  | SIS - Engr ERW Issued | 30d | 2005-08-22 A | 2005-09-02 A | EK000YA002 SS, EK050SY050, EK030SY050, EK020SY050, EK010SY050, EK000I354A SS | 100% | 2005-08-30 | 2005-10-10 | 2006-07-29 | 0 | 0 | 00 | EK | I35 | 000 | IC | I | X | E | I3520 | A |  |  |  |  |  |  |  |  |
| EK000I618D |  | Technical Evaluation - Temperature Gauges | 1d | 2005-08-22 A | 2005-08-26 A | PK000I618C | 100% | 2005-08-29 | 2005-08-29 | 2006-07-29 | 0 | 0 | 00 | EK | I16 | 000 | IC | I |  | E | I1618 | D |  |  |  |  |  |  |  |  |
| EK000I621D |  | Technical Evaluation - Temperature Elements | 1d | 2005-08-22 A | 2005-08-26 A | PK000I621C | 100% | 2005-08-29 | 2005-08-29 | 2006-07-29 | 0 | 0 | 00 | EK | I16 | 000 | IC | I |  | E | I1621 | D |  |  |  |  |  |  |  |  |
| EK000I623D |  | Technical Evaluation - Multi-Point Thermocouples | 1d | 2005-08-22 A | 2005-08-26 A | PK000I623C | 100% | 2005-08-29 | 2005-08-29 | 2006-07-29 | 0 | 0 | 00 | EK | I16 | 000 | IC | I |  | E | I1623 | D |  |  |  |  |  |  |  |  |
| EK000I444A |  | Develop & Issue Inquiry ERW - Analyzer Shelter | 10d | 2005-09-05 A | 2005-09-16 A | EK020SY050 | 100% |  |  | 2006-07-29 | 0 | 0 | 00 | EK | I44 | 000 | IC | I |  | E | I4440 | A |  |  |  |  |  |  |  |  |
| EK000I221A |  | 000 Everest Control Valves - Issue Inquiry Req | 10d | 2005-09-12 A | 2005-09-16 A | EK000I220A, EK000SY125, EK000SY126, EK000SY127 | 100% | 2005-09-28 | 2005-10-11 | 2006-07-29 | 0 | 0 | 00 | EK | I22 | 000 | IC | I |  | E | I2211 | A |  |  |  |  |  |  |  |  |
| EK000IC350 |  | DCS - Develop Design Basis | 30d | 2005-09-12 A | 2005-11-03 A | PK000IC35G | 100% | 2005-09-23 | 2005-11-03 | 2006-07-29 | 0 | 0 | 00 | EK | I35 | 000 | IC | I |  | E | I3510 |  |  |  |  |  |  |  |  |  |
| EK000I444D |  | Technical Evaluation - Analyzer Shelter | 15d | 2005-10-17 A | 2006-01-11 A | PK000I444C FS+15d | 100% | 2005-11-14 | 2005-12-02 | 2006-07-29 | 0 | 0 | 00 | EK | I44 | 000 | IC | I |  | E | I4440 | D |  |  |  |  |  |  |  |  |
| EK000I352D |  | SIS - Tech Evaluation | 10d | 2005-10-31 A | 2005-12-08 A | PK000I352C | 100% | 2005-11-02 | 2005-11-15 | 2006-07-29 | 0 | 0 | 00 | EK | I35 | 000 | IC | I | X | E | I3520 | D |  |  |  |  |  |  |  |  |
| EK000IC351 |  | DCS - Develop Purchase T-Req | 5d | 2005-11-04 A | 2005-12-08 A | EK000IC350 | 100% | 2005-11-04 | 2005-11-10 | 2006-07-29 | 0 | 0 | 00 | EK | I35 | 000 | IC | I |  | E | I3510 |  |  |  |  |  |  |  |  |  |
| EK000I354D |  | ITCC - Tech Evaluation | 10d | 2005-11-14 A | 2006-01-12 A | PK000I354C | 100% | 2005-11-14 | 2005-11-25 | 2006-07-29 | 0 | 0 | 00 | EK | I35 | 000 | IC | I | X | E | I3542 | D |  |  |  |  |  |  |  |  |
| PK000IC35J |  | DCS - Planning V. Data | 20d | 2005-11-17 A | 2006-06-26 A | PK000IC35G, PK000IC35K | 100% | 2005-12-19 | 2006-01-17 | 2006-07-29 | 0 | 0 | 00 | EK | I35 | 000 | IC | I |  | E | I3510 | J | 55 | 75 | 85 | P15 | 06 |  |  |  |
| EK000IC352 |  | DCS - Final Tech Evaluation for Purchase | 5d | 2005-12-13 A | 2005-12-15 A | PK000IC350 | 100% | 2005-12-13 | 2005-12-19 | 2006-07-29 | 0 | 0 | 00 | EK | I35 | 000 | IC | I |  | E | I3510 |  |  |  |  |  |  |  |  |  |
| EK000IC353 |  | DCS - Software Programming by KBR | 163d | 2006-02-15 A | 2006-10-27 A | PK000IC351 SS+25d, EM02ASY172 FF, EM03ASY172 FF | 100% | 2006-07-21 | 2007-03-06 | 2006-07-29 | 0 | 0 | 00 | EK | I35 | 000 | IC | I |  | E | I3510 |  |  |  |  |  |  | 135 | 02 |  |
| EK000I3520 |  | SIS - Develop Final Design Basis | 30d | 2006-02-27 A | 2006-04-12 A | PK000I352G, EK010SY090, EK020SY090, EK030SY090, EK050SY090 | 100% | 2006-02-27 | 2006-04-07 | 2006-07-29 | 0 | 0.2 | 00 | EK | I35 | 000 | IC | I |  | E | I3520 |  | 20 | 25 | 35 |  | 06 |  |  |  |
| EK000I3540 |  | ITCC - Develop Final Design Basis | 20d | 2006-02-27 A | 2006-04-04 A | PK000I354G | 100% | 2006-02-27 | 2006-03-24 | 2006-07-29 | 0 | 0 | 00 | EK | I35 | 000 | IC | I |  | E | I3542 |  |  |  |  |  |  |  |  |  |
| EK00012210 |  | 000 Everest Control Valves - D/S,Sizing,Tech Eval | 10d | 2006-03-06 A | 2006-04-05 A | EK000SY126, PK000I221K | 100% | 2006-02-27 | 2006-03-10 | 2006-07-29 | 0 | 0 | 00 | EK | I22 | 000 | IC | I | X | E | I2211 |  |  |  |  | IR |  |  |  |  |
| EK000I444B |  | Develop Final Design Basis - Shelters/ Analyzers | 25d | 2006-03-20 A | 2006-04-21 A | PK000I444G SS | 100% | 2006-04-03 | 2006-05-05 | 2006-07-29 | 0 | 1.3 | 00 | EK | I44 | 000 | IC | I |  | E | I4440 | F | 20 | 25 | 35 |  | 03 |  |  |  |
| EK000I444M |  | Develop Final Deign Basis - Shelters/ Analyzers | 25d | 2006-03-20 A | 2006-04-21 A | PK000I444G SS | 100% | 2006-04-03 | 2006-05-05 | 2006-07-29 | 0 | 0 | 00 | EK | I44 | 000 | IC | I |  | E | I4440 | F | 20 | 25 | 35 |  | 03 |  |  |  |
| EK000I444F |  | Planning V. Data - Shelters/ Analyzers | 20d | 2006-03-27 A | 2006-10-06 A | PK000I444K | 100% | 2006-03-27 | 2006-04-21 | 2006-07-29 | 0 | 4.3 | 00 | EK | I44 | 000 | IC | I |  | E | I4440 | F | 19 | 20 | 25 |  | 06 |  |  | Still waiting on some drawings. |
| PK000I352J |  | SIS - Planning V. Data | 20d | 2006-03-27 A | 2006-08-01 A | PK000I352G, PK000I352K | 100% | 2006-03-27 | 2006-04-21 | 2006-07-29 | 0 | 0 | 00 | EK | I35 | 000 | IC | I |  | E | I3520 | J | 19 | 20 | 30 | P15 | 06 |  |  | No data recieved as of July 20. |
| PK000I354J |  | ITCC - Planning V. Data | 20d | 2006-03-27 A | 2006-07-27 A | PK000I354G, PK000I354K | 100% | 2006-03-27 | 2006-04-21 | 2006-07-29 | 0 | 0 | 00 | EK | I35 | 000 | IC | I |  | E | I3542 | J |  |  |  | P15 |  |  |  | Waiting on Dwgs. |
| EK000I3541 |  | ITCC - Develop Purchase T-Req | 5d | 2006-03-30 A | 2006-04-05 A | EK000I3540 | 100% | 2006-04-10 | 2006-04-14 | 2006-07-29 | 0 | 0 | 00 | EK | I35 | 000 | IC | I |  | E | I3542 |  |  |  |  |  |  |  |  |  |
| EK000I221F |  | 000 Everest Control Valves - Purchase ERW | 5d | 2006-04-10 A | 2006-06-16 A | EK00012210 | 100% | 2006-04-10 | 2006-04-14 | 2006-07-29 | 0 | 0 | 00 | EK | I22 | 000 | IC | I | N | E | I2211 | F |  |  |  | IR |  |  |  | Need Deminsional Data - Everest CV's |
| EK000I3521 |  | SIS - Develop Purchase T-Req | 5d | 2006-05-01 A | 2006-05-04 A | EK000I3520 | 100% | 2006-05-22 | 2006-05-26 | 2006-07-29 | 0 | 0 | 00 | EK | I35 | 000 | IC | I |  | E | I3520 |  | 4 | 5 | 10 |  | 03 |  |  |  |
| EK000I3542 |  | ITCC - Final Tech Evaluation for Purchase | 5d | 2006-05-01 A | 2006-05-04 A | PK000I3540 | 100% | 2006-05-01 | 2006-05-05 | 2006-07-29 | 0 | 0 | 00 | EK | I35 | 000 | IC | I |  | E | I3542 |  |  |  |  |  |  |  |  | Vendor Pricing Update change |
| EK000I444C |  | Develop / Issue T-Req - Shelters/ Analyzers | 10d | 2006-05-01 A | 2006-05-04 A | EK000I444D, PK000I444G, EK000I444M, EK000I444B | 100% | 2006-05-01 | 2006-05-12 | 2006-07-29 | 0 | 4.4 | 00 | EK | I44 | 000 | IC | I |  | E | I4440 | F | 5 | 10 | 15 |  | 03 |  |  |  |
| EK000I3523 |  | SIS - Software Programming by KBR | 90d | 2006-05-19 A | 2006-10-23 A | PK000I3521, EM02ASY172 FF, EM03ASY172 FF, EK000I3522 | 100% | 2006-06-13 | 2006-10-16 | 2006-07-29 | 0 | 0 | 00 | EK | I35 | 000 | IC | I |  | E | I3520 |  |  |  |  |  |  | 90 | 02 | New FAT Date. |
| EK000I3522 |  | SIS - Final Tech Evaluation for Purchase | 5d | 2006-05-30 A | 2006-06-01 A | PK000I3520 | 100% | 2006-05-30 | 2006-06-05 | 2006-07-29 | 0 | 0 | 00 | EK | I35 | 000 | IC | I |  | E | I3520 |  |  |  |  |  |  |  |  |  |
| EK000I444E |  | Final Tech Evaluation - Shelters/ Analyzers | 10d | 2006-06-19 A | 2006-06-29 A | PK000I444D | 100% | 2006-06-19 | 2006-06-30 | 2006-07-29 | 0 | 0 | 00 | EK | I44 | 000 | IC | I |  | E | I4440 | F | 5 | 10 | 15 |  | 03 |  |  |  |
| PK000IC35M |  | DCS - Review / Approve V. Data | 10d | 2006-06-27 A | 2006-07-20 A | PK000IC35J | 100% | 2006-06-27 | 2006-07-10 | 2006-07-29 | 0 | 0 | 00 | EK | I35 | 000 | IC | I |  | E | I3510 | M | 9 | 10 | 15 |  | 06 |  |  |  |

Notes:
- EK000IC030: P3 Activity Log Info: Add RFQ & Quote cycle for this ERW
- EK000IC015: P3 Activity Log Info: Actual
- EK000IC045: P3 Activity Log Info: Includes Split of Work with MEC
- EK000IC010: P3 Activity Log Info: FF= Foundation / Fieldbus

| ID | WBS | Activity | Duration | Start | Finish | Predecessors | Complete | Planned start | Planned finish | Constraint | zData Date | PCA Criticality Index | PCA Duration Sensitivity | EB02 - UNIT | EB01 - RESP | EB06 - WORK OP | EB03 - AREA | EB05 - DISCIPLINE | EB07 - REQN | EB04 - CLASS | EB09 - IPMS | EB00 - EPC | Optimistic Duration | Most Likely Duration | Pessimistic Duration | EB21 - Rev 2 Risk Associations | EB11 - FLAG | EB10 - KEY | EB14 - RISK | user_integer2 | Discipl1ne Gorgon |
| --- | --- | --- | --- | --- | --- | --- | --- | --- | --- | --- | --- | --- | --- | --- | --- | --- | --- | --- | --- | --- | --- | --- | --- | --- | --- | --- | --- | --- | --- | --- | --- |
| EK000I354M |  | ITCC - Review / Approve V. Data | 10d | 2006-07-31 A | 2006-08-21 A | PK000I354J, EK000I3542 FF | 100% | 2006-07-25 | 2006-08-07 |  | 2006-07-29 | 0 | 0 | 00 | EK | I35 | 000 | IC | I3542 | I | M | E |  |  |  |  |  |  |  |  |  |
| EK000I352M |  | SIS - Review / Approve V. Data | 5d | 2006-08-02 A | 2006-08-07 A | PK000I352J | 100% | 2006-07-31 | 2006-08-04 |  | 2006-07-29 | 0 | 0 | 00 | EK | I35 | 000 | IC | I3520 | I | M | E | 4 | 5 | 10 | 06 |  |  |  |  |  |
| EK000I444G |  | Review / Approve V. Data - Shelters/ Analyzers | 10d | 2006-10-09 A | 2006-10-13 A | EK000I444F, EK000I444E FF | 100% | 2006-10-09 | 2006-10-20 | start on or after 2006-10-09 | 2006-07-29 | 0 | 0 | 00 | EK | I44 | 000 | IC | I4440 | I | F | E | 9 | 10 | 20 | 06 |  |  |  |  |  |
|  | MB | **Furnaces & Flares Engineering** |  | 2005-03-14 | 2006-09-30 |  |  |  |  |  |  |  |  |  |  |  |  |  |  |  |  |  |  |  |  |  |  |  |  |  |  |
| EK000MB005 |  | Develop & Issue Furnance Job Plan | 15d | 2005-03-14 A | 2005-04-15 A | EK000PE090 FF+5d, EK000YA002 SS | 100% | 2005-03-14 | 2005-04-01 |  | 2006-07-29 | 0 | 0 | 00 | EK | G10 | 000 | MB |  | M |  | E |  |  |  |  | X |  |  |  |  |
| EK000MBP1C |  | 101-B Prepare & Issue Prelim. Shop Fab to Proc. | 3d | 2005-03-18 A | 2005-03-22 A | EK000MB33A | 100% |  |  |  | 2006-07-29 | 0 | 0 | 00 | EK | MB6 | 000 | MB | MB221 | M | A | E |  |  |  |  | X | CE | 04 |  |  |
| EK000MB010 |  | 101-B Furnance Analytical - Convection Design | 30d | 2005-03-21 A | 2005-04-29 A | EK000MB33A, EK000MB33B FF+10d | 100% |  |  |  | 2006-07-29 | 0 | 0 | 00 | EK | MB1 | 000 | MB | MB101 | M |  | E |  |  |  |  | X |  | 04 |  |  |
| EK000MB61C |  | Prepare & Issue Prelim. RFQ - MB610 to Proc. | 3d | 2005-03-23 A | 2005-03-25 A | EK000MB33A | 100% |  |  |  | 2006-07-29 | 0 | 0 | 00 | EK | MB6 | 000 | MB | MB610 | M | A | E |  |  |  |  | X | CE | 04 |  |  |
| EK000MB62C |  | Prepare & Issue Prelim. RFQ - MB621 to Proc. | 3d | 2005-03-23 A | 2005-03-25 A | EK000MB33A | 100% |  |  |  | 2006-07-29 | 0 | 0 | 00 | EK | MB6 | 000 | MB | MB621 | M | A | E |  |  |  |  | X | CE | 04 |  |  |
| EK000MB060 |  | 101-B General Arrangement Drawing | 15d | 2005-03-28 A | 2005-04-08 A | EK000MB015 | 100% | 2005-05-20 | 2005-06-10 |  | 2006-07-29 | 0 | 0 | 00 | EK | MB1 | 000 | MB | MB101 | M |  | E |  |  |  |  | X |  | 04 |  |  |
| EK000MB085 |  | 101-B Radiant Detail Drawings - IFF | 50d | 2005-03-28 A | 2005-05-13 A | EK000MB010 SS+5d | 100% | 2005-03-28 | 2005-06-06 |  | 2006-07-29 | 0 | 0 | 00 | EK | MB2 | 000 | MB | MB101 | M |  | E |  |  |  |  | X |  | 04 |  |  |
| EK000MB090 |  | 101-B Convection Detail Drawings - IFF | 50d | 2005-03-28 A | 2005-05-13 A | EK000MB010 SS+5d | 100% | 2005-03-28 | 2005-06-06 |  | 2006-07-29 | 0 | 0 | 00 | EK | MB2 | 000 | MB | MB101 | M |  | E |  |  |  |  | X |  | 04 |  |  |
| EK000MB41C |  | Prepare & Issue Prelim. RFQ - MB410 to Proc. | 3d | 2005-03-28 A | 2005-03-29 A | EK000MB33A | 100% | 2005-03-28 | 2005-03-30 |  | 2006-07-29 | 0 | 0 | 00 | EK | MB4 | 000 | MB | MB410 | M | A | E |  |  |  |  | X | CE | 04 |  |  |
| EK000MB63C |  | Prepare & Issue Prelim. RFQ - MB630 to Proc. | 3d | 2005-03-28 A | 2005-03-30 A | EK000MB33A | 100% |  |  |  | 2006-07-29 | 0 | 0 | 00 | EK | MB6 | 000 | MB | MB630 | M | A | E |  |  |  |  | X | CE | 04 |  |  |
| EK000MBP3C |  | Prepare & Issue Prelim. RFQ Pressure Parts | 6d | 2005-03-28 A | 2005-04-04 A | EK000MB33A | 100% |  |  |  | 2006-07-29 | 0 | 0 | 00 | EK | MB3 | 000 | MB | MB311 | M | A | E |  |  |  |  | X | CE | 04 |  |  |
| EK000MBP4C |  | Prepare & Issue Prelim. RFQ Cast Material | 3d | 2005-03-28 A | 2005-03-30 A | EK000MB33A | 100% |  |  |  | 2006-07-29 | 0 | 0 | 00 | EK | MB4 | 000 | MB | MB312 | M | A | E |  |  |  |  | X | CE | 04 |  |  |
| EK000MB51C |  | Prepare & Issue Prelim. RFQ - MB511 to Proc. | 3d | 2005-04-04 A | 2005-04-06 A | EK000MB33A | 100% |  |  |  | 2006-07-29 | 0 | 0 | 00 | EK | MB5 | 000 | MB | MB511 | M | A | E |  |  |  |  | X | CE | 04 |  |  |
| EK000MBP1D |  | 101-B Technical Bid Evaluation Shop Fab | 5d | 2005-04-05 A | 2005-04-08 A | EK000MBP1C, PK000MBP1H | 100% | 2005-04-05 | 2005-04-11 |  | 2006-07-29 | 0 | 0 | 00 | EK | MB6 | 000 | MB | MB221 | M | D | E |  |  |  |  | X | CE | 04 |  |  |
| EK000MB61D |  | Technical Evaluation - MB610 | 5d | 2005-04-13 A | 2005-04-19 A | PK000MB61H | 100% |  |  |  | 2006-07-29 | 0 | 0 | 00 | EK | MB6 | 000 | MB | MB610 | M | D | E |  |  |  |  | X | CE | 04 |  |  |
| EK000MB51F |  | Prepare & Issue Purchase ERW - MB511 | 10d | 2005-04-22 A | 2005-05-18 A | EK000MB51C | 100% | 2005-04-22 | 2005-05-05 |  | 2006-07-29 | 0 | 0 | 00 | EK | MB6 | 000 | MB | MB511 | M |  | E |  |  |  |  | X | CE | 04 |  |  |
| EK000MB62D |  | Technical Evaluation - MB621 | 5d | 2005-04-29 A | 2005-05-19 A | PK000MB62H | 100% | 2005-04-29 | 2005-05-05 |  | 2006-07-29 | 0 | 0 | 00 | EK | MB6 | 000 | MB | MB621 | M | D | E |  |  |  |  | X | CE | 04 |  |  |
| EK000MB63D |  | Technical Evaluation - MB630 | 5d | 2005-04-29 A | 2005-07-25 A | PK000MB63H | 100% | 2005-04-29 | 2005-05-05 |  | 2006-07-29 | 0 | 0 | 00 | EK | MB6 | 000 | MB | MB630 | M | D | E |  |  |  |  | X | CE | 04 |  |  |
| EK000MB070 |  | 101-B Foundation Loads | 10d | 2005-05-02 A | 2005-05-20 A | EK000MB060 | 100% | 2005-05-27 | 2005-06-10 |  | 2006-07-29 | 0 | 0 | 00 | EK | MB1 | 000 | MB | MB101 | M |  | E |  |  |  |  | X |  | 04 |  |  |
| EK000MB51D |  | Technical Evaluation - MB511 | 5d | 2005-05-03 A | 2005-05-17 A | EK000MB51F, PK000MB51H | 100% | 2005-05-06 | 2005-05-12 |  | 2006-07-29 | 0 | 0 | 00 | EK | MB5 | 000 | MB | MB511 | M | D | E |  |  |  |  | X | CE | 04 |  |  |
| EK000MB080 |  | 101-B Convection Coil Design | 15d | 2005-05-06 A | 2005-05-13 A | EK000MB015, EK000MB055 | 100% | 2005-06-07 | 2005-06-27 |  | 2006-07-29 | 0 | 0 | 00 | EK | MB6 | 000 | MB | MB101 | M |  | E |  |  |  |  | X |  | 04 |  |  |
| EK000MB050 |  | 101-B Radiant coil design | 10d | 2005-05-06 A | 2005-05-13 A | EK000MB015 | 100% | 2005-05-20 | 2005-06-03 |  | 2006-07-29 | 0 | 0 | 00 | EK | MB6 | 000 | MB | MB101 | M |  | E |  |  |  |  | X |  | 04 |  |  |
| EK000MB33F |  | MB333 - Develop & Issue Purchase ERW 101-B | 20d | 2005-05-06 A | 2005-05-24 A | EK000MD51F | 100% | 2005-05-20 | 2005-06-17 |  | 2006-07-29 | 0 | 0 | 00 | EK | MB3 | 000 | MB | MB333 | M | A | E |  |  |  |  | X | CE | 04 |  |  |
| EK000MBP4D |  | Technical Evaluation - 101-B Cast Material | 5d | 2005-05-06 A | 2005-05-31 A | EK000MBP4C, PK000MBP4H | 100% | 2005-05-20 | 2005-05-26 |  | 2006-07-29 | 0 | 0 | 00 | EK | MB4 | 000 | MB | MB312 | M | D | E |  |  |  |  | X | CE | 04 |  |  |
| EK000MB41D |  | Technical Evaluation - MB410 | 5d | 2005-05-10 A | 2005-05-31 A | EK000MB41C, PK000MB41H | 100% | 2005-05-23 | 2005-05-27 |  | 2006-07-29 | 0 | 0 | 00 | EK | MB4 | 000 | MB | MB410 | M | D | E |  |  |  |  | X | CE | 04 |  |  |
| EK000MB055 |  | 101-B Radiant coil BOM | 10d | 2005-05-16 A | 2005-05-20 A | EK000MB050 | 100% | 2005-05-23 | 2005-06-06 |  | 2006-07-29 | 0 | 0 | 00 | EK | MB6 | 000 | MB | MB101 | M | A | E |  |  |  |  | X |  | 04 |  |  |
| EK000MB075 |  | 101-B Convection Coil BOM | 10d | 2005-05-16 A | 2005-05-20 A | EK000MB080 | 100% | 2005-06-28 | 2005-07-13 |  | 2006-07-29 | 0 | 0 | 00 | EK | MB6 | 000 | MB | MB101 | M | A | E |  |  |  |  | X |  | 04 |  |  |
| EK000MB61E |  | Prepare & Issue Purchase ERW - MB610 | 3d | 2005-05-16 A | 2005-05-23 A | EK000MB61D, PK000MB61I FF, EK000MB020 SS, EK000MB61C | 100% | 2005-06-06 | 2005-06-08 |  | 2006-07-29 | 0 | 0 | 00 | EK | MB6 | 000 | MB | MB610 | M | F | E |  |  |  |  | X | CE | 04 |  |  |
| EK000MBP3D |  | Technical Evaluation - 101-B Pressure Parts | 5d | 2005-05-17 A | 2005-06-10 A | EK000MBP3C, PK000MBP3H | 100% | 2005-05-23 | 2005-05-27 |  | 2006-07-29 | 0 | 0 | 00 | EK | MB3 | 000 | MB | MB311 | M | D | E |  |  |  |  | X | CE | 04 |  |  |
| EK000MB63F |  | Prepare & Issue Purchase ERW - MB630 | 10d | 2005-05-27 A | 2005-06-29 A | EK000MB025 SS, EK000MB63C | 100% | 2005-05-27 | 2005-06-10 |  | 2006-07-29 | 0 | 0 | 00 | EK | MB6 | 000 | MB | MB630 | M |  | E |  |  |  |  | X | CE | 04 | 1 |  |
| EK000MBP1E |  | Prepare & Issue Purchase ERW 101-B Shop Fab | 3d | 2005-05-27 A | 2005-06-10 A | EK000MB085, EK000MB090, EK000MBP1D, PK000MBP1I FF | 100% | 2005-05-27 | 2005-06-01 |  | 2006-07-29 | 0 | 0 | 00 | EK | MB6 | 000 | MB | MB221 | M | F | E |  |  |  |  | X | CE | 04 |  |  |
| EK000MB41E |  | Prepare & Issue Purchase ERW - MB410 | 34d | 2005-06-03 A | 2005-06-20 A | EK000MB075, EK000MB41D, PK000MB41I SS | 100% | 2005-06-03 | 2005-07-22 |  | 2006-07-29 | 0 | 0 | 00 | EK | MB4 | 000 | MB | MB410 | M | F | E |  |  |  |  | X | CE | 04 |  |  |
| EK000MBP4E |  | Prepare & Issue Purchase ERW 101-B Cast Material | 10d | 2005-06-03 A | 2005-06-16 A | EK000MB055, EK000MB085, EK000MBP4D, PK000MBP4I FF | 100% |  |  |  | 2006-07-29 | 0 | 0 | 00 | EK | MB4 | 000 | MB | MB312 | M | F | E |  |  |  |  | X | CE | 04 |  |  |
| EK000MBP3E |  | Prepare & Issue Purchase ERW 101-B Pressure Part | 5d | 2005-06-13 A | 2005-06-16 A | EK000MB055, EK000MB075, EK000MBP3D, PK000MBP3I SS | 100% | 2005-06-20 | 2005-06-24 |  | 2006-07-29 | 0 | 0 | 00 | EK | MB3 | 000 | MB | MB311 | M | F | E |  |  |  |  | X | CE | 04 |  |  |
| EK000MB62F |  | Prepare & Issue Purchase ERW - MB621 | 10d | 2005-06-13 A | 2005-07-06 A | EK000MB030 SS, EK000MB62C | 100% | 2005-06-13 | 2005-06-24 |  | 2006-07-29 | 0 | 0 | 00 | EK | MB6 | 000 | MB | MB621 | M | A | E |  |  |  |  | X | CE |  | 2 |  |
| EK000MB045 |  | Catalyst Vac data sheets | 5d | 2005-06-20 A | 2005-06-27 A | EK000MB040 | 100% | 2005-07-06 | 2005-07-12 |  | 2006-07-29 | 0 | 0 | 00 | EK | MB6 | 000 | MB |  | M |  | E |  |  |  |  | X |  |  | 1 |  |
| EK000MB33D |  | MB333 - Technical Evaluation 101-B | 5d | 2005-06-27 A | 2005-08-01 A | EK000MB33F, PK000MB33H | 100% | 2005-06-27 | 2005-07-05 |  | 2006-07-29 | 0 | 0 | 00 | EK | MB3 | 000 | MB | MB333 | M | D | E |  |  |  |  | X | CE | 04 | 5 |  |
| EK000MBG10 |  | General & Administrative | 318d | 2005-06-27 A | 2006-09-30 A | EK000MB005 SS | 100% | 2005-06-27 | 2006-09-19 |  | 2006-07-29 | 0 | 0 | 00 | EK | G10 | 000 | MB |  | MB |  | E |  |  |  |  | WE |  |  |  | G10 |
| EK000MB69F |  | Prepare & IssuePurchase ERW - MB691 | 10d | 2005-07-04 A | 2005-07-18 A | EK000MB035 SS | 100% | 2005-06-27 | 2005-07-12 |  | 2006-07-29 | 0 | 0 | 00 | EK | MB6 | 000 | MB | MB691 | M | A | E |  |  |  |  | X | CE |  | 10 |  |
| EK000MB65F |  | Develop & Issue Purchase ERW - MB622 | 10d | 2005-07-06 A | 2005-07-18 A | EK000MB040 FS+5d | 100% | 2005-07-06 | 2005-07-19 |  | 2006-07-29 | 0 | 0 | 00 | EK | MB6 | 000 | MB | MB622 | M | A | E |  |  |  |  | X | CE |  | 10 |  |
| EK000MB66F |  | Prepare & IssuePurchase ERW - MB660 | 10d | 2005-07-11 A | 2005-07-22 A | EK000MB035 SS | 100% | 2005-06-27 | 2005-07-12 |  | 2006-07-29 | 0 | 0 | 00 | EK | MB6 | 000 | MB | MB660 | M | A | E |  |  |  |  | X | CE |  | 10 |  |
| EK000MB68F |  | Prepare & Issue Purchase ERW - MB692 | 10d | 2005-07-13 A | 2005-07-27 A | EK000MB045 FS+9d | 100% | 2005-07-13 | 2005-07-26 |  | 2006-07-29 | 0 | 0 | 00 | EK | MB6 | 000 | MB | MB692 | M | A | E |  |  |  |  | X | CE |  | 10 |  |
| EK000MB21F |  | Prepare & Issue Purchase ERW - MB212 | 10d | 2005-07-18 A | 2005-07-26 A | EK000MB42F | 100% | 2005-08-10 | 2005-08-23 |  | 2006-07-29 | 0 | 0 | 00 | EK | MB2 | 000 | MB | MB212 | M | A | E |  |  |  |  | X | CE |  | 10 |  |
| EK000MB42F |  | Prepare & Issue Purchase ERW - MB420 | 10d | 2005-07-18 A | 2005-07-27 A | EK000MB68F | 100% | 2005-07-27 | 2005-08-09 |  | 2006-07-29 | 0 | 0 | 00 | EK | MB4 | 000 | MB | MB420 | M | A | E |  |  |  |  | X | CE |  | 10 |  |
| EK000MB34F |  | Prepare & Issue Purchase ERW - MB340 | 10d | 2005-07-20 A | 2005-07-22 A | EK000MB075 FS+40d | 100% | 2005-07-20 | 2005-08-02 |  | 2006-07-29 | 0 | 0 | 00 | EK | MB3 | 000 | MB | MB340 | M | A | E |  |  |  |  | X | CE | 04 | 10 |  |
| EK000MB64F |  | Prepare & Issue Purchase ERW - MB640 | 5d | 2005-08-01 A | 2005-08-11 A | EK000MB055, EK000MB085, EK000MB63F | 100% | 2005-08-01 | 2005-08-05 |  | 2006-07-29 | 0 | 0 | 00 | EK | MB6 | 000 | MB | MB640 | M | A | E |  |  |  |  | X | CE |  | 9 |  |
| EK000MB65D |  | Technical Evaluation - MB622 | 5d | 2005-08-19 A | 2005-09-01 A | EK000MB65F, PK000MB65H | 100% | 2005-08-24 | 2005-08-30 |  | 2006-07-29 | 0 | 0 | 00 | EK | MB6 | 000 | MB | MB622 | M | D | E |  |  |  |  | X | CE |  | 5 |  |
| EK000MB69D |  | Technical Evaluation - MB691 | 5d | 2005-08-22 A | 2005-09-06 A | EK000MB69F, PK000MB69H | 100% | 2005-08-16 | 2005-08-22 |  | 2006-07-29 | 0 | 0 | 00 | EK | MB6 | 000 | MB | MB691 | M | D | E |  |  |  |  | X | CE |  | 5 |  |
| EK000MB68D |  | Technical Evaluation - MB692 | 5d | 2005-08-29 A | 2005-09-30 A | EK000MB68F, PK000MB68H | 100% | 2005-08-31 | 2005-09-06 |  | 2006-07-29 | 0 | 0 | 00 | EK | MB6 | 000 | MB | MB692 | M | D | E |  |  |  |  | X | CE |  | 5 |  |
| EK000MB34D |  | Technical Evaluation - MB340 | 11d | 2005-08-29 A | 2005-09-13 A | EK000MB34F, PK000MB34H | 100% | 2005-09-26 | 2005-10-10 |  | 2006-07-29 | 0 | 0 | 00 | EK | MB3 | 000 | MB | MB340 | M | D | E |  |  |  |  | X | CE | 04 | 5 |  |
| EK000MB66D |  | Technical Evaluation - MB660 | 5d | 2005-08-29 A | 2005-09-12 A | EK000MB66F, PK000MB66H | 100% | 2005-08-29 | 2005-09-02 |  | 2006-07-29 | 0 | 0 | 00 | EK | MB6 | 000 | MB | MB660 | M | D | E |  |  |  |  | X | CE |  | 5 |  |
| EK000MB64D |  | Technical Evaluation - MB640 | 10d | 2005-09-09 A | 2005-11-17 A | EK000MB64F, PK000MB64H, PK000MB71H | 100% | 2005-10-10 | 2005-10-21 |  | 2006-07-29 | 0 | 0 | 00 | EK | MB6 | 000 | MB | MB640 | M | D | E |  |  |  |  | X | CE |  | 5 |  |
| EK000MB21D |  | Technical Evaluation - MB212 | 10d | 2005-09-28 A | 2005-12-02 A | EK000MB21F, PK000MB21H | 100% | 2005-09-28 | 2005-10-11 |  | 2006-07-29 | 0 | 0 | 00 | EK | MB2 | 000 | MB | MB212 | M | D | E |  |  |  |  | X | CE |  | 5 |  |
| EK000MB095 |  | 101-B Ducting Detail Drawings - IFF | 50d | 2005-10-03 A | 2006-05-05 A | EK000MB010 SS+5d, EK000MB085 SS+25d, EK000MB090 SS+25d, PK000MB61N SS+10d, PK000MB62N SS+10d, PK000MB63N, PK000MB61N FF, PK000MB63N FF, PK02HMB35 FF, PK02HMB36 FF, PK02HMB37 FF | 100% | 2005-11-28 | 2006-02-07 |  | 2006-07-29 | 0 | 0 | 00 | EK | MB2 | 000 | MB | MB101 | MB |  | E |  |  |  |  | X |  | 04 | 50 |  |
| EK020PR20D |  | PR201 KAAP Catalyst - Technical Evaluation | 10d | 2005-10-18 A | 2005-12-02 A | PK000PR20C, EK000EB015 | 100% | 2005-09-28 | 2005-10-11 |  | 2006-07-29 | 0 | 0 | 00 | EK | MB2 | 000 | MB | PR201 | M | D | E |  |  |  |  | X | CE |  | 5 |  |
| EK000MB42D |  | Technical Evaluation - MB420 | 10d | 2005-11-15 A | 2005-11-30 A | EK000MB42F, PK000MB42H | 100% | 2005-11-15 | 2005-11-28 |  | 2006-07-29 | 0 | 0 | 00 | EK | MB4 | 000 | MB | MB420 | M | D | E |  |  |  |  | X | CE |  | 5 |  |

Notes:
- EK000I352M: user_text1: Per Steve T. base line dates should be (10-Jul-06 to 14-Jul-06)
- EK000MBP1C: P3 Activity Log Info: Utilize FMCL as Basis for ERW's
- EK000MB61C: P3 Activity Log Info: Utilize FMCL as Basis for ERW's
- EK000MB62C: P3 Activity Log Info: Utilize FMCL as Basis for ERW's
- EK000MB41C: P3 Activity Log Info: Utilize FMCL as Basis for ERW's
- EK000MB63C: P3 Activity Log Info: Utilize FMCL as Basis for ERW's
- EK000MBP3C: P3 Activity Log Info: Utilize FMCL as Basis for ERW's
- EK000MBP4C: P3 Activity Log Info: Utilize FMCL as Basis for ERW's
- EK000MB51C: P3 Activity Log Info: Utilize FMCL as Basis for ERW's

| ID | WBS | Activity | Duration | Start | Finish | Predecessors | Complete | Planned start | Planned finish | zData Date | PCA Criticality Index | PCA Duration Sensitivity | EB02 - UNIT | EB01 - RESP | EB06 - WORK OP | EB03 - AREA | EB05 - DISCIPLINE | EB04 - CLASS | EB11 - FLAG | EB00 - EPC | EB07 - REQN | EB10 - KEY | EB09 - IPMS |
| --- | --- | --- | --- | --- | --- | --- | --- | --- | --- | --- | --- | --- | --- | --- | --- | --- | --- | --- | --- | --- | --- | --- | --- |
|  | MC | **Exchangers Engineering** |  | 2005-03-07 | 2006-03-15 |  |  |  |  |  |  |  |  |  |  |  |  |  |  |  |  |  |  |
| EK000MC010 |  | Develop & Issue Exchanger Work Plan | 20d | 2005-03-07 A | 2005-04-08 A | EK000PE090 FF+5d, EK000YA002 SS | 100% | 2005-03-07 | 2005-04-01 | 2006-07-29 | 0 | 0 | 00 | EK | G10 | 000 | MC | M | X | E |  |  |  |
| EK000MC31C |  | Prepare & Issue Prelim. RFQ - MC310 to Proc. | 1d | 2005-03-18 A | 2005-03-18 A | EK000PR030 | 100% |  |  | 2006-07-29 | 0 | 0 | 00 | EK | MC3 | 000 | MC | M | X | E | MC310 | PE | A |
| EK000MC61C |  | Prepare & Issue Prelim. RFQ - MC610 to Proc. | 1d | 2005-03-18 A | 2005-03-18 A | EK000PR030 | 100% |  |  | 2006-07-29 | 0 | 0 | 00 | EK | MC6 | 000 | MC | M | X | E | MC610 | PE | A |
| EK000MC210 |  | Cooling Water Balance Review | 4d | 2005-03-21 A | 2005-03-28 A | EK000PR045 | 100% | 2005-03-21 | 2005-03-24 | 2006-07-29 | 0 | 0 | 00 | EK | MC2 | 000 | MC | M | X | E | MC210 | PE |  |
| EK000MC32C |  | Issue Prelim. RFQ - MC311 | 1d | 2005-03-21 A | 2005-03-21 A | EK000PR030 | 100% |  |  | 2006-07-29 | 0 | 0 | 00 | EK | MC3 | 000 | MC | M | X | E | MC311 | PE | A |
| EK020MC31A |  | MC312 - (120,121-C) - Issue Prelim. RFQ | 1d | 2005-03-21 A | 2005-03-21 A | EK000PR030 | 100% |  |  | 2006-07-29 | 0 | 0 | 00 | EK | MC3 | 000 | MC | M | X | E | MC312 | PE | A |
| EK000MC21C |  | Prepare & Issue Prelim. RFQ - MC210 to Proc. | 0d | 2005-03-28 A | 2005-03-29 A | EK000MC210 FF | 100% | 2005-03-28 | 2005-03-28 | 2006-07-29 | 0 | 0 | 00 | EK | MC2 | 000 | MC | M | X | E | MC210 | PE | A |
| EK000MC23C |  | Prepare & Issue Prelim. RFQ - MC230 to Proc. | 1d | 2005-03-28 A | 2005-03-29 A | EK000MC21C SS | 100% | 2005-03-28 | 2005-03-28 | 2006-07-29 | 0 | 0 | 00 | EK | MC2 | 000 | MC | M | X | E | MC230 | PE | A |
| EK000MC31B |  | Develop & Issue Design Data for ERW - MC310 | 5d | 2005-04-01 A | 2005-04-12 A | EK000MC31A | 100% | 2005-04-01 | 2005-04-07 | 2006-07-29 | 0 | 0 | 00 | EK | MC3 | 000 | MC | M | X | E | MC310 | PE |  |
| EK000MC31F |  | Finalize Equip. Data Sheets for ERW - MC310 | 10d | 2005-04-01 A | 2005-05-13 A | EK000MC31A, EK000MC31B FF+5d | 100% | 2005-04-01 | 2005-04-14 | 2006-07-29 | 0 | 0 | 00 | EK | MC3 | 000 | MC | M | X | E | MC310 | PE |  |
| EK000MC32B |  | Develop & Issue Design Data for ERW - MC311 | 5d | 2005-04-04 A | 2005-04-18 A | EK000MC32A | 100% | 2005-04-04 | 2005-04-08 | 2006-07-29 | 0 | 0 | 00 | EK | MC3 | 000 | MC | M | X | E | MC311 | PE |  |
| EK000MC32F |  | Finalize Equip. Data Sheets for ERW - MC311 | 15d | 2005-04-04 A | 2005-06-24 A | EK000MC32A, EK000MC32B FF+10d | 100% | 2005-04-04 | 2005-04-22 | 2006-07-29 | 0 | 0 | 00 | EK | MC3 | 000 | MC | M | X | E | MC311 | PE | A |
| EK000MC21B |  | Develop & Issue Design Data for ERW - MC210 | 17d | 2005-04-07 A | 2005-05-02 A | EK000MC21A | 100% | 2005-04-07 | 2005-04-29 | 2006-07-29 | 0 | 0 | 00 | EK | MC2 | 000 | MC | M | X | E | MC210 | PE |  |
| EK000MC21F |  | Finalize Equip. Data Sheets for ERW - MC210 | 10d | 2005-04-11 A | 2005-07-14 A | EK000MC21A, EK000MC21B FF+8d | 100% | 2005-04-11 | 2005-04-22 | 2006-07-29 | 0 | 0 | 00 | EK | MC2 | 000 | MC | M | X | E | MC210 | PE |  |
| EK000MC61D |  | Technical Evaluation - MC610 | 5d | 2005-04-20 A | 2005-05-02 A | PK000MC61H | 100% | 2005-04-20 | 2005-04-26 | 2006-07-29 | 0 | 0 | 00 | EK | MC6 | 000 | MC | M | X | E | MC610 | PE | D |
| EK000MC61F |  | Finalize Equip. Data Sheets for ERW - MC610 | 5d | 2005-04-20 A | 2005-05-10 A | EK000MC61A, EK000MC61B FF | 100% | 2005-04-20 | 2005-04-26 | 2006-07-29 | 0 | 0 | 00 | EK | MC6 | 000 | MC | M | X | E | MC610 | PE |  |
| EK000MC61B |  | Develop & Issue Design Data for ERW - MC610 | 6d | 2005-05-04 A | 2005-05-20 A | EK000MC61A | 100% | 2005-05-04 | 2005-05-11 | 2006-07-29 | 0 | 0 | 00 | EK | MC6 | 000 | MC | M | X | E | MC610 | PE |  |
| EK000MC21D |  | Technical Evaluation - MC210 | 5d | 2005-05-09 A | 2005-05-23 A | PK000MC21H | 100% | 2005-05-06 | 2005-05-12 | 2006-07-29 | 0 | 0 | 00 | EK | MC2 | 000 | MC | M | X | E | MC210 | PE | D |
| EK000MC23D |  | Technical Evaluation - MC230 | 5d | 2005-05-09 A | 2005-05-23 A | PK000MC23H | 100% | 2005-05-06 | 2005-05-12 | 2006-07-29 | 0 | 0 | 00 | EK | MC2 | 000 | MC | M | X | E | MC230 | PE | D |
| EK000MC23B |  | Develop & Issue Design Data for ERW - MC230 | 5d | 2005-05-09 A | 2005-05-13 A | EK000MC23A | 100% |  |  | 2006-07-29 | 0 | 0 | 00 | EK | MC2 | 000 | MC | M | X | E | MC230 | PE |  |
| EK000MC21P |  | Develop & Issue Setting Plans for ERW - MC210 | 10d | 2005-05-16 A | 2005-07-21 A | EK000MC21F FF | 100% | 2005-05-20 | 2005-06-03 | 2006-07-29 | 0 | 0 | 00 | EK | MC2 | 000 | MC | M | X | E | MC210 | PE | J |
| EK000MC31P |  | Develop & Issue Setting Plans for ERW - MC310 | 15d | 2005-05-16 A | 2005-06-28 A | EK000MC31F | 100% | 2005-05-09 | 2005-05-27 | 2006-07-29 | 0 | 0 | 00 | EK | MC3 | 000 | MC | M | X | E | MC310 | PE | J |
| EK000MC63B |  | Develop & Issue Design Data for ERW - MC630 | 7d | 2005-05-16 A | 2005-05-20 A | EK000MC63A | 100% | 2005-05-09 | 2005-05-17 | 2006-07-29 | 0 | 0 | 00 | EK | MC6 | 000 | MC | M | X | E | MC630 | NE |  |
| EK000MC23F |  | Finalize Equip. Data Sheets for ERW - MC230 | 19d | 2005-05-23 A | 2005-07-14 A | EK000MC23A, EK000MC23B FS+5d, EK000MC63B FF | 100% | 2005-05-23 | 2005-06-17 | 2006-07-29 | 0 | 0 | 00 | EK | MC2 | 000 | MC | M | X | E | MC230 | PE |  |
| EK000MC23P |  | Develop & Issue Setting Plans for ERW - MC230 | 10d | 2005-06-01 A | 2005-07-21 A | EK000MC23F FF+4d | 100% | 2005-06-20 | 2005-07-05 | 2006-07-29 | 0 | 0 | 00 | EK | MC2 | 000 | MC | M | X | E | MC230 | PE | J |
| EK000MC32P |  | Develop & Issue Setting Plans for ERW - MC311 | 15d | 2005-06-02 A | 2005-07-21 A | EK000MC32F FF+5d | 100% | 2005-06-20 | 2005-07-12 | 2006-07-29 | 0 | 0 | 00 | EK | MC3 | 000 | MC | M | X | E | MC311 | PE | J |
| EK000MC31D |  | Technical Evaluation - MC310 | 5d | 2005-06-06 A | 2005-06-24 A | PK000MC31H | 100% | 2005-06-06 | 2005-06-10 | 2006-07-29 | 0 | 0 | 00 | EK | MC3 | 000 | MC | M | X | E | MC310 | PE | D |
| EK000MC32D |  | Technical Evaluation - MC311 | 5d | 2005-06-06 A | 2005-06-24 A | PK000MC32H | 100% | 2005-06-06 | 2005-06-10 | 2006-07-29 | 0 | 0 | 00 | EK | MC3 | 000 | MC | M | X | E | MC311 | PE | D |
| EK020MC31D |  | MC312 - (120,121-C) - Technical Evaluation | 5d | 2005-06-06 A | 2005-06-24 A | PK020MC3C | 100% | 2005-06-06 | 2005-06-10 | 2006-07-29 | 0 | 0 | 00 | EK | MC3 | 000 | MC | M | X | E | MC312 | PE | D |
| PK000MC61N |  | Recv. Planning V. Data MC610 | 20d | 2005-10-11 A | 2006-01-03 A | PK000MC61J | 100% | 2005-10-17 | 2005-11-11 | 2006-07-29 | 0 | 0 | 00 | EK | MC6 | 000 | MC | M | X | E | MC610 | P15 | J |
| EK000MC61E |  | Prepare & Issue Purchase ERW - MC610 | 10d | 2005-10-19 A | 2005-10-26 A | EK000MC61D, EK000MC61F, PK000MC61P SS | 100% | 2005-10-31 | 2005-11-11 | 2006-07-29 | 0 | 0 | 00 | EK | MC6 | 000 | MC | M | X | E | MC610 | PE | F |
| EK020MC31C |  | MC312 - (120,121-C) - Prepare & Issue Purchase ERW | 15d | 2005-10-24 A | 2005-10-28 A | EK020MC31D, PK020MC31H | 100% | 2005-11-09 | 2005-11-29 | 2006-07-29 | 0 | 0 | 00 | EK | MC3 | 000 | MC | M | X | E | MC312 | PE | F |
| PK020MC31F |  | MC312 - (120,121-C) - Planning V. Data (Setting Plans) | 20d | 2005-10-24 A | 2005-11-08 A | PK020MC31G | 100% | 2005-11-04 | 2005-12-01 | 2006-07-29 | 0 | 0 | 00 | EK | MC3 | 000 | MC | M |  | E | MC312 | P15 | J |
| EK000MC21E |  | Prepare & Issue Purchase ERW - MC210 | 10d | 2005-10-31 A | 2005-12-08 A | EK000MC21D, EK000MC21P, PK000MC21M, PK000MC21J | 100% | 2005-11-07 | 2005-11-18 | 2006-07-29 | 0 | 0 | 00 | EK | MC2 | 000 | MC | M | X | E | MC210 | PE | F |
| EK000MC23E |  | Prepare & Issue Purchase ERW - MC230 | 10d | 2005-10-31 A | 2005-11-14 A | EK000MC23D, EK000MC23P, PK000MC23M, PK000MC23J | 100% | 2005-11-04 | 2005-11-17 | 2006-07-29 | 0 | 0 | 00 | EK | MC2 | 000 | MC | M | X | E | MC230 | PE | F |
| EK000MC32E |  | Prepare & Issue Purchase ERW - MC311 (103-C1/C2, 123-C1/CF1-4) | 15d | 2005-11-09 A | 2005-12-16 A | EK000MC32D, EK000MC32P S1, PK000MC32P | 100% | 2005-11-09 | 2005-11-29 | 2006-07-29 | 0 | 0 | 00 | EK | MC3 | 000 | MC | M | X | E | MC311 | PE | F |
| EK000MC31E |  | Prepare & Issue Purchase ERW - MC310 | 10d | 2006-02-03 A | 2006-03-15 A | EK000MC31D, EK000MC31P S1, PK000MC31I, PK000MC31J | 100% | 2006-02-20 | 2006-03-03 | 2006-07-29 | 0 | 0 | 00 | EK | MC3 | 000 | MC | MC | X | E | MC310 | PE | F |

Notes:
- EK000MC31C: P3 Activity Log Info: Utilize FMCL as Basis for ERW's
- EK000MC61C: P3 Activity Log Info: Utilize FMCL as Basis for ERW's
- EK000MC32C: P3 Activity Log Info: Utilize FMCL as Basis for ERW's
- EK020MC31A: P3 Activity Log Info: Utilize FMCL as Basis for ERW's
- EK000MC21C: P3 Activity Log Info: Utilize FMCL as Basis for ERW's / If no major changes after cooling water review
- EK000MC23C: P3 Activity Log Info: Utilize FMCL as Basis for ERW's
- EK000MC31B: P3 Activity Log Info: ACTUAL
- PK000MC61N: P3 Activity Log Info: Setting Plans by Vendor

| ID | WBS | Activity | Duration | Start | Finish | Predecessors | Complete | Planned start | Planned finish | zData Date | PCA Criticality Index | PCA Duration Sensitivity | EB02 - UNIT | EB01 - RESP | EB06 - WORK OP | EB03 - AREA | EB05 - DISCIPLINE | EB04 - CLASS | EB11 - FLAG | EB00 - EPC | EB07 - REQN | EB10 - KEY | EB09 - IPMS | EB17 - Suffix |
| --- | --- | --- | --- | --- | --- | --- | --- | --- | --- | --- | --- | --- | --- | --- | --- | --- | --- | --- | --- | --- | --- | --- | --- | --- |
|  | MD | **Vessels Engineering** |  | 2005-02-21 | 2006-04-25 |  |  |  |  |  |  |  |  |  |  |  |  |  |  |  |  |  |  |  |
| EK000MD005 |  | Attend Alignment & strategy meetings | 15d | 2005-02-21 A | 2005-03-11 A | EK000YA002 SS | 100% |  |  | 2006-07-29 | 0 | 0 | 00 | EK | G10 | 000 | MD | X | X | E |  |  |  |  |
| EK000MD015 |  | Conversion of drawings to metric units | 21d | 2005-02-21 A | 2005-03-21 A | EK000YA002 SS | 100% |  |  | 2006-07-29 | 0 | 0 | 00 | EK | G10 | 000 | MD | X | X | E |  |  |  |  |
| EK000MD31C |  | Prepare & Issue Prelim. RFQ - MD301 to Proc. | 5d | 2005-03-14 A | 2005-03-18 A | EK000YA002 SS | 100% |  |  | 2006-07-29 | 0 | 0 | 00 | EK | MD3 | 000 | MD | M | X | E | MD301 | CE | A |  |
| EK000MD32C |  | Prepare & Issue Prelim. RFQ - MD302 to Proc. | 5d | 2005-03-14 A | 2005-03-18 A | EK000YA002 SS | 100% |  |  | 2006-07-29 | 0 | 0 | 00 | EK | MD3 | 000 | MD | M | X | E | MD302 | CE | A |  |
| EK000MD34C |  | Prepare & Issue Prelim. RFQ - MD304 to Proc. | 5d | 2005-03-14 A | 2005-03-18 A | EK000YA002 SS | 100% |  |  | 2006-07-29 | 0 | 0 | 00 | EK | MD3 | 000 | MD | M | X | E | MD304 | CE | A |  |
| EK000MD51C |  | Prepare & Issue Prelim. RFQ - MD501 to Proc. | 5d | 2005-03-14 A | 2005-03-18 A | EK000YA002 SS | 100% |  |  | 2006-07-29 | 0 | 0 | 00 | EK | MD5 | 000 | MD | M | X | E | MD501 | CE | A |  |
| EK000MD33C |  | Prepare & Issue Prelim. RFQ - MD303 to Proc. | 5d | 2005-03-21 A | 2005-03-24 A | EK000YA002 SS | 100% | 2005-03-21 | 2005-03-25 | 2006-07-29 | 0 | 0 | 00 | EK | MD3 | 000 | MD | M | X | E | MD303 | FE | A |  |
| EK000MD41C |  | Prepare & Issue Prelim. RFQ - MD401 to Proc. | 2d | 2005-03-21 A | 2005-03-22 A | EK000YA002 SS | 100% |  |  | 2006-07-29 | 0 | 0 | 00 | EK | MD4 | 000 | MD | M | X | E | MD401 | CE | A |  |
| EK000MD43C |  | Prepare & Issue Prelim. RFQ - MD403 to Proc. | 2d | 2005-03-21 A | 2005-03-22 A | EK000YA002 SS | 100% |  |  | 2006-07-29 | 0 | 0 | 00 | EK | MD4 | 000 | MD | M | X | E | MD403 | CE | A |  |
| EK000MD33B |  | Develop & Issue Design Data for ERW - MD303 | 5d | 2005-03-28 A | 2005-04-07 A | EK000MD33A, EK000MD33P SS+5d | 100% | 2005-03-28 | 2005-04-01 | 2006-07-29 | 0 | 0 | 00 | EK | MD3 | 000 | MD | M | X | E | MD303 | FE |  |  |
| EK000MD060 |  | Prepare Vessel work plan & other quality documents | 5d | 2005-04-01 A | 2005-04-01 A | EK000PE090 FF | 100% | 2005-04-01 | 2005-04-07 | 2006-07-29 | 0 | 0 | 00 | EK | G10 | 000 | MD | M | X | E |  |  |  |  |
| EK000MD020 |  | Equipment Modeling for Vessel - MEC | 122d | 2005-04-13 A | 2006-04-25 A | EK000MD025 FF, EK000MD21P, EK000MD015 | 100% | 2005-05-27 | 2005-11-17 | 2006-07-29 | 0 | 0 | 00 | EK | G10 | 000 | MD | MD | X | E |  |  |  |  |
| EK000MD31B |  | Develop & Issue Design Data for ERW - MD301 | 2d | 2005-04-15 A | 2005-04-18 A | EK000MD31A, EK000MD31P | 100% |  |  | 2006-07-29 | 0 | 0 | 00 | EK | MD3 | 000 | MD | M | X | E | MD301 | CE |  |  |
| EK000MD32B |  | Develop & Issue Design Data for ERW - MD302 | 5d | 2005-04-15 A | 2005-04-18 A | EK000MD32A, EK000MD32P | 100% | 2005-04-15 | 2005-04-21 | 2006-07-29 | 0 | 0 | 00 | EK | MD3 | 000 | MD | M | X | E | MD302 | CE |  |  |
| EK000MD34B |  | Develop & Issue Design Data for ERW - MD304 | 5d | 2005-04-15 A | 2005-04-18 A | EK000MD34A, EK000MD34P | 100% | 2005-04-15 | 2005-04-21 | 2006-07-29 | 0 | 0 | 00 | EK | MD3 | 000 | MD | M | X | E | MD304 | CE |  |  |
| EK000MD34D |  | Technical Evaluation - MD304 | 5d | 2005-04-15 A | 2005-05-23 A | PK000MD34H | 100% | 2005-04-15 | 2005-04-21 | 2006-07-29 | 0 | 0 | 00 | EK | MD3 | 000 | MD | M | X | E | MD304 | CE | D |  |
| EK000MD41D |  | Technical Evaluation - MD401 | 5d | 2005-04-15 A | 2005-05-23 A | PK000MD41H | 100% | 2005-04-15 | 2005-04-21 | 2006-07-29 | 0 | 0 | 00 | EK | MD4 | 000 | MD | M | X | E | MD401 | CE | D |  |
| EK000MD21B |  | Develop & Issue Design Data for ERW - MD201 | 12d | 2005-04-18 A | 2005-06-08 A | EK000MD21A, EK000MD21P | 100% | 2005-04-18 | 2005-05-03 | 2006-07-29 | 0 | 0 | 00 | EK | MD2 | 000 | MD | M | X | E | MD201 | FE |  |  |
| EK000MF32B |  | Develop/Issue Load Sht & Design Data ERW - MF302 | 10d | 2005-04-18 A | 2005-05-06 A | EK000SY015, EK000SY075 SS+5d, EK000MF31P | 100% | 2005-04-18 | 2005-04-29 | 2006-07-29 | 0 | 0 | 00 | EK | MF3 | 000 | MD | M | X | E | MF302 |  |  |  |
| EK000MF33B |  | Develop/Issue Load Sht & Design Data ERW - MF311 | 10d | 2005-04-18 A | 2005-04-26 A | EK000SY015, EK000SY075 SS+5d | 100% | 2005-04-18 | 2005-04-29 | 2006-07-29 | 0 | 0 | 00 | EK | MF3 | 000 | MD | M | X | E | MF311 | FE |  |  |
| EK000MD34F |  | Update/Issue Formal Inquiry for ERW - MD304 | 10d | 2005-04-20 A | 2005-05-20 A | EK000MD34A, EK000MD34B, EK000MD34P, EK000MD34R FF | 100% | 2005-04-20 | 2005-05-03 | 2006-07-29 | 0 | 0 | 00 | EK | MD3 | 000 | MD | M | X | E | MD304 | CE |  |  |
| EK000MD51B |  | Develop & Issue Design Data for ERW - MD501 | 6d | 2005-04-20 A | 2005-04-28 A | EK000MD51A FS+5d | 100% | 2005-04-20 | 2005-04-27 | 2006-07-29 | 0 | 0 | 00 | EK | MD5 | 000 | MD | M | X | E | MD501 | CE |  |  |
| EK000MD025 |  | Prepare job quality drawings for ERW | 10d | 2005-04-25 A | 2005-06-27 A | EK000CV030 FS+5d, EK000MD21Q FF+10d | 100% | 2005-05-24 | 2005-06-07 | 2006-07-29 | 0 | 0 | 00 | EK | G10 | 000 | MD | M | X | E |  |  |  |  |
| EK000MD33F |  | Update/Issue Formal Inquiry for ERW - MD303 | 10d | 2005-04-25 A | 2005-06-10 A | EK000MD33B, EK000MD33P FF | 100% | 2005-04-25 | 2005-05-06 | 2006-07-29 | 0 | 0 | 00 | EK | MD3 | 000 | MD | M | X | E | MD303 | FE | A |  |
| EK000MD51D |  | Technical Evaluation - MD501 | 5d | 2005-04-25 A | 2005-05-04 A | PK000MD51H | 100% | 2005-04-25 | 2005-04-29 | 2006-07-29 | 0 | 0 | 00 | EK | MD5 | 000 | MD | M | X | E | MD501 | CE | D |  |
| EK000MF32F |  | Develop & Issue Design Data for Tank Subcontract - MF302 | 15d | 2005-04-26 A | 2005-05-09 A | EK000MF32B | 100% | 2005-05-06 | 2005-05-26 | 2006-07-29 | 0 | 0 | 00 | EK | MF3 | 000 | MD | M | X | E | MF302 |  | A |  |
| EK000MF33F |  | Develop & Issue Design Data for Tank Subcontract - MF311 | 15d | 2005-04-26 A | 2005-05-09 A | EK000MF33B, EK000PR020, EK000PR030 | 100% | 2005-04-26 | 2005-05-16 | 2006-07-29 | 0 | 0 | 00 | EK | MF3 | 000 | MD | M | X | E | MF311 | FE | A |  |
| EK000MD51F |  | Update/Issue Formal Inquiry for ERW - MD501 | 10d | 2005-04-29 A | 2005-05-09 A | EK000MD51A, EK000MD51B | 100% | 2005-04-28 | 2005-05-11 | 2006-07-29 | 0 | 0 | 00 | EK | MD5 | 000 | MD | M | X | E | MD501 | CE |  |  |
| EK000MF31B |  | Develop & Issue Design Data for Tank Subcontrac - MF301 | 5d | 2005-05-02 A | 2005-05-09 A | EK000MF31A | 100% | 2005-05-09 | 2005-05-13 | 2006-07-29 | 0 | 0 | 00 | EK | MF3 | 000 | MD | M | X | E | MF301 |  |  |  |
| EK000MD31F |  | Update/Issue Formal Inquiry for ERW - MD301 | 10d | 2005-05-02 A | 2005-05-17 A | EK000MD31B, EK000MD31P | 100% | 2005-05-02 | 2005-05-13 | 2006-07-29 | 0 | 0 | 00 | EK | MD3 | 000 | MD | M | X | E | MD301 | CE |  |  |
| EK000MD32F |  | Update/Issue Formal Inquiry for ERW - MD302 | 10d | 2005-05-03 A | 2005-05-20 A | EK000MD32B, EK000MD32P | 100% | 2005-04-26 | 2005-05-09 | 2006-07-29 | 0 | 0 | 00 | EK | MD3 | 000 | MD | M | X | E | MD302 | CE |  |  |
| EK000MD43D |  | Technical Evaluation - MD403 | 5d | 2005-05-03 A | 2005-05-26 A | PK000MD43H | 100% | 2005-04-26 | 2005-05-02 | 2006-07-29 | 0 | 0 | 00 | EK | MD4 | 000 | MD | M | X | E | MD403 | CE | D |  |
| EK000MD43B |  | Develop & Issue Design Data for ERW - MD403 | 5d | 2005-05-09 A | 2005-05-13 A | EK000MD43A, EK000MD43P | 100% | 2005-05-16 | 2005-05-20 | 2006-07-29 | 0 | 0 | 00 | EK | MD4 | 000 | MD | M | X | E | MD403 | CE |  |  |
| EK000MD45B |  | Develop & Issue Design Data for ERW - MD405 | 5d | 2005-05-09 A | 2005-06-08 A | EK000MD45A, EK000MD45P | 100% | 2005-06-06 | 2005-06-10 | 2006-07-29 | 0 | 0 | 00 | EK | MD4 | 000 | MD | M | X | E | MD405 | CE |  |  |
| EK000MD41B |  | Develop & Issue Design Data for ERW - MD401 | 11d | 2005-05-09 A | 2005-05-19 A | EK000MC31B, EK000MD41A | 100% | 2005-05-09 | 2005-05-23 | 2006-07-29 | 0 | 0 | 00 | EK | MD4 | 000 | MD | M | X | E | MD401 | CE |  |  |
| EK000MD42B |  | Develop & Issue Design Data for ERW - MD402 | 5d | 2005-05-09 A | 2005-05-13 A | EK000MD42A, EK000MD42P | 100% |  |  | 2006-07-29 | 0 | 0 | 00 | EK | MD4 | 000 | MD | M | X | E | MD402 | CE |  |  |
| EK000MD32D |  | Technical Evaluation - MD302 | 5d | 2005-05-16 A | 2005-06-03 A | PK000MD32H | 100% | 2005-05-06 | 2005-05-12 | 2006-07-29 | 0 | 0 | 00 | EK | MD3 | 000 | MD | M | X | E | MD302 | CE | D |  |
| EK000MD43F |  | Update/Issue Formal Inquiry for ERW - MD403 | 10d | 2005-05-16 A | 2005-05-26 A | EK000MD43B, EK000MD43P | 100% | 2005-05-20 | 2005-06-03 | 2006-07-29 | 0 | 0 | 00 | EK | MD4 | 000 | MD | M | X | E | MD403 | CE |  |  |
| EK000MD31D |  | Technical Evaluation - MD301 | 5d | 2005-05-16 A | 2005-05-26 A | PK000MD31H | 100% | 2005-05-16 | 2005-05-20 | 2006-07-29 | 0 | 0 | 00 | EK | MD3 | 000 | MD | M | X | E | MD301 | CE | D |  |
| EK000MD33D |  | Technical Evaluation - MD303 | 5d | 2005-05-16 A | 2005-06-03 A | PK000MD33H | 100% | 2005-05-16 | 2005-05-20 | 2006-07-29 | 0 | 0 | 00 | EK | MD3 | 000 | MD | M | X | E | MD303 | FE | D |  |
| EK000MD42F |  | Update/Issue Formal Inquiry for ERW - MD402 | 10d | 2005-05-16 A | 2005-05-20 A | EK000MD42B, EK000MD42P | 100% | 2005-05-06 | 2005-05-19 | 2006-07-29 | 0 | 0 | 00 | EK | MD4 | 000 | MD | M | X | E | MD402 | CE |  |  |
| EK000MD21F |  | Develop & Issue Inquiry ERW - MD201 | 15d | 2005-05-17 A | 2005-07-18 A | EK000MD21B FF+5d, EK000MD21P, EK000MD21Q FF+10d | 100% | 2005-05-17 | 2005-06-07 | 2006-07-29 | 0 | 0 | 00 | EK | MD2 | 000 | MD | M | X | E | MD201 | FE | A |  |
| EK000MD41F |  | Update/Issue Formal Inquiry for ERW - MD401 | 5d | 2005-05-20 A | 2005-05-26 A | EK000MD41A, EK000MD41B | 100% |  |  | 2006-07-29 | 0 | 0 | 00 | EK | MD4 | 000 | MD | M | X | E | MD401 | CE |  |  |
| EK000MD44B |  | Develop & Issue Design Data for ERW - MD404 | 5d | 2005-05-23 A | 2005-05-26 A | EK000MD44A, EK000MD44P, EK000MD44Q | 100% | 2005-06-06 | 2005-06-10 | 2006-07-29 | 0 | 0 | 00 | EK | MD4 | 000 | MD | M | X | E | MD404 | NE |  |  |
| EK000MD47B |  | Develop & Issue Design Data for ERW - MD406 | 5d | 2005-05-23 A | 2005-05-26 A | EK000MD47A, EK000MD47P | 100% | 2005-06-06 | 2005-06-10 | 2006-07-29 | 0 | 0 | 00 | EK | MD4 | 000 | MD | M | X | E | MD406 | CE |  |  |
| EK000MD22B |  | Develop & Issue Design Data for ERW - MD202 | 5d | 2005-05-23 A | 2005-06-01 A | EK000MD22A, EK000MD22P | 100% | 2005-05-23 | 2005-05-27 | 2006-07-29 | 0 | 0 | 00 | EK | MD2 | 000 | MD | M | X | E | MD202 | FE |  |  |
| EK000MD44F |  | Update/Issue Formal Inquiry for ERW - MD404 | 15d | 2005-05-27 A | 2005-06-01 A | EK000MD44B, EK000MD44P, EK000MD44Q | 100% | 2005-05-27 | 2005-06-17 | 2006-07-29 | 0 | 0 | 00 | EK | MD4 | 000 | MD | M | X | E | MD404 | NE | A |  |
| EK000MD22F |  | Update/Issue Formal Inquiry for ERW - MD202 | 10d | 2005-06-01 A | 2005-06-17 A | EK000MD22B, EK000MD22P | 100% | 2005-05-27 | 2005-06-10 | 2006-07-29 | 0 | 0 | 00 | EK | MD2 | 000 | MD | M | X | E | MD202 | FE | A |  |
| EK000MD31E |  | Prepare & Issue Purchase ERW - MD301 | 6d | 2005-06-03 A | 2005-06-10 A | EK000MD31D, EK000MD31F, PK000MD31I FF, PK000MD31M | 100% |  |  | 2006-07-29 | 0 | 0 | 00 | EK | MD3 | 000 | MD | M | X | E | MD301 | CE | F |  |
| EK000MD34E |  | Prepare & Issue Purchase ERW - MD304 | 6d | 2005-06-03 A | 2005-06-10 A | EK000MD34D, EK000MD34F, PK000MD34I FF, PK000MD34M | 100% |  |  | 2006-07-29 | 0 | 0 | 00 | EK | MD3 | 000 | MD | M | X | E | MD304 | CE | F |  |
| EK000MD32E |  | Prepare & Issue Purchase ERW - MD302 | 3d | 2005-06-06 A | 2005-06-10 A | EK000MD32D, EK000MD32F, PK000MD32M FF | 100% | 2005-06-03 | 2005-06-07 | 2006-07-29 | 0 | 0 | 00 | EK | MD3 | 000 | MD | M | X | E | MD302 | CE | F |  |
| EK000MD43E |  | Prepare & Issue Purchase ERW - MD403 | 6d | 2005-06-06 A | 2005-06-10 A | EK000MD43D, EK000MD43F, PK000MD43I FF, PK000MD43M | 100% | 2005-06-03 | 2005-06-10 | 2006-07-29 | 0 | 0 | 00 | EK | MD4 | 000 | MD | M | X | E | MD403 | CE | F |  |
| EK000MD51E |  | Prepare & Issue Purchase ERW - MD501 | 3d | 2005-06-08 A | 2005-06-10 A | EK000MD51D, EK000MD51F, PK000MD51I FF, PK000MD51M | 100% |  |  | 2006-07-29 | 0 | 0 | 00 | EK | MD5 | 000 | MD | M | X | E | MD501 | CE | F |  |
| EK000MD45F |  | Update/Issue Formal Inquiry for ERW - MD405 | 10d | 2005-06-13 A | 2005-06-30 A | EK000MD45B, EK000MD45P | 100% | 2005-06-03 | 2005-06-16 | 2006-07-29 | 0 | 0 | 00 | EK | MD4 | 000 | MD | M | X | E | MD405 | CE | A |  |
| EK000MD46F |  | Update/Issue Formal Inquiry for ERW - MD411 | 10d | 2005-06-13 A | 2005-06-30 A | EK000MD46B, EK000MD46P | 100% | 2005-06-13 | 2005-06-24 | 2006-07-29 | 0 | 0 | 00 | EK | MD4 | 000 | MD | M | X | E | MD411 | PE | A |  |
| EK000MD33E |  | Prepare & Issue Purchase ERW - MD303 | 10d | 2005-08-01 A | 2005-08-04 A | EK000MD33D, EK000MD33F, PK000MD33I FF, PK000MD33M | 100% | 2005-09-05 | 2005-09-19 | 2006-07-29 | 0 | 0 | 00 | EK | MD3 | 000 | MD | M | X | E | MD303 | FE | F |  |
| EK000MD41E |  | Prepare & Issue Purchase ERW - MD401 | 4d | 2005-08-01 A | 2005-08-04 A | EK000MD41D, EK000MD41F, PK000MD41I FF, PK000MD41M | 100% | 2005-08-09 | 2005-08-12 | 2006-07-29 | 0 | 0 | 00 | EK | MD4 | 000 | MD | M | X | E | MD401 | CE | F |  |
| EK000MD21D |  | Technical Evaluation - MD201 | 5d | 2005-08-16 A | 2005-09-09 A | PK000MD21H | 100% | 2005-08-11 | 2005-08-17 | 2006-07-29 | 0 | 0 | 00 | EK | MD2 | 000 | MD | M | X | E | MD201 | FE | D |  |
| PK000MD31N |  | Recv. Planning V. Data MD301 | 20d | 2005-09-09 A | 2005-10-10 A | PK000MD31J | 100% | 2005-09-26 | 2005-10-21 | 2006-07-29 | 0 | 0 | 00 | EK | MD3 | 000 | MD | M | X | E | MD301 | P15 | J |  |
| PK000MD33N |  | Recv. Planning V. Data MD303 | 20d | 2005-09-09 A | 2005-10-26 A | PK000MD33J | 100% | 2005-09-26 | 2005-10-21 | 2006-07-29 | 0 | 0 | 00 | EK | MD3 | 000 | MD | M | Y | E | MD303 | P15 | J |  |
| PK000MD41N |  | Recv. Planning V. Data MD401 | 20d | 2005-09-09 A | 2005-10-17 A | PK000MD41J | 100% | 2005-09-26 | 2005-10-21 | 2006-07-29 | 0 | 0 | 00 | EK | MD4 | 000 | MD | M |  | E | MD401 | P15 | J |  |
| PK000MD43N |  | Recv. Planning V. Data MD403 | 20d | 2005-09-09 A | 2005-11-14 A | PK000MD43J | 100% | 2005-09-26 | 2005-10-21 | 2006-07-29 | 0 | 0 | 00 | EK | MD4 | 000 | MD | M |  | E | MD403 | P15 | J |  |
| PK000MD32N |  | Recv. Planning V. Data MD302 | 20d | 2005-09-16 A | 2005-11-01 A | PK000MD32J | 100% | 2005-09-26 | 2005-10-21 | 2006-07-29 | 0 | 0 | 00 | EK | MD3 | 000 | MD | M |  | E | MD302 | P15 | J |  |
| PK000MD34N |  | Recv. Planning V. Data MD304 | 20d | 2005-09-16 A | 2005-12-13 A | PK000MD34J | 100% | 2005-09-26 | 2005-10-21 | 2006-07-29 | 0 | 0 | 00 | EK | MD3 | 000 | MD | M |  | E | MD304 | P15 | J |  |
| EK000MD21E |  | Prepare & Issue Purchase ERW - MD201 | 3d | 2005-09-26 A | 2005-09-28 A | EK000MD21D, EK000MD21F, PK000MD21I FF, PK000MD21P | 100% |  |  | 2006-07-29 | 0 | 0 | 00 | EK | MD2 | 000 | MD | M | X | E | MD201 | FE | F |  |
| PK000MD51N |  | Recv. Planning V. Data MD501 | 20d | 2005-09-27 A | 2005-12-02 A | PK000MD51J | 100% | 2005-10-17 | 2005-11-11 | 2006-07-29 | 0 | 0 | 00 | EK | MD5 | 000 | MD | M | X | E | MD501 | P15 | J |  |
| EK000MD055 |  | Pre-qualification trip to vendors shop (105-D) | 6d | 2005-10-03 A | 2005-10-06 A | EK000MD33E | 100% | 2005-10-03 | 2005-10-10 | 2006-07-29 | 0 | 0 | 00 | EK | MD3 | 000 | MD | M | X | E | MD303 |  |  |  |
| EK000MD103 |  | MD305 Merc. Removal Bed - Develop & Issue Design Data for ERW | 3d | 2005-11-10 A | 2005-12-27 A | EK000PR600, EK000PR610 | 100% | 2005-12-27 | 2005-12-29 | 2006-07-29 | 0 | 0 | 00 | EK | MD3 | 000 | MD | M | X | E | MD305 | FE |  |  |
| EK000MD102 |  | MD305 Merc. Removal Bed - Prepare & Issue Req for Inquiry to Procur. | 2d | 2005-12-27 A | 2006-01-05 A | EK000PR610 | 100% | 2005-12-27 | 2005-12-28 | 2006-07-29 | 0 | 0 | 00 | EK | MD3 | 000 | MD | M | X | E | MD305 | FE | A | E4B4 |

Notes:
- EK000MD31C: P3 Activity Log Info: Utilize FMCL as Basis for ERW's
- EK000MD32C: P3 Activity Log Info: Utilize FMCL as Basis for ERW's
- EK000MD34C: P3 Activity Log Info: Utilize FMCL as Basis for ERW's
- EK000MD51C: P3 Activity Log Info: Utilize FMCL as Basis for ERW's
- EK000MD33C: P3 Activity Log Info: Utilize FMCL as Basis for ERW's
- EK000MD41C: P3 Activity Log Info: Utilize FMCL as Basis for ERW's
- EK000MD43C: P3 Activity Log Info: Utilize FMCL as Basis for ERW's
- EK000MD33B: P3 Activity Log Info: 105-D, 122-C1/2/3 (Ammonia Synthesis Converter)
- EK000MD31B: P3 Activity Log Info: 103-D (Secondary Reformer)
- EK000MD32B: P3 Activity Log Info: 104-D1/D2 (High Temp Shift Converters)
- EK000MD34B: P3 Activity Log Info: 106-D, 108-DA/DB, 109-DA/DB
- EK000MD21B: P3 Activity Log Info: 101-E, 102-E (Absorber, / Stripper)
- EK000MF32B: P3 Activity Log Info: Fresh Water/FW/PW Storage / Tanks
- EK000MF33B: P3 Activity Log Info: Ammonia Storage Tanks
- EK000MD51B: P3 Activity Log Info: 107-D (Primary Reformer Effluent Transfer Line)
- EK000MF31B: P3 Activity Log Info: 114-F (Benefield Solution Storage / Tank)
- EK000MD43B: P3 Activity Log Info: 106-F (Ammonia / Separator)
- EK000MD45B: P3 Activity Log Info: 115/118/156/157-F (Drums, / Sumps, Filter)
- EK000MD41B: P3 Activity Log Info: 101-f (Steam Drum)
- EK000MD42B: P3 Activity Log Info: 102-F1/F2, 104-F, 144-F (ISBL / Drums)
- EK000MD21F: P3 Activity Log Info: 101-E, 102-E (Absorber, / Stripper)
- EK000MD44B: P3 Activity Log Info: 107-F, 109-F, 132-F
- EK000MD47B: P3 Activity Log Info: 103-F CO2 Stripper Cond. KO / Drum
- EK000MD22B: P3 Activity Log Info: 103-E, 104-E, 105-E, / 150-E
- EK000MD103: P3 Activity Log Info: 103-E, 104-E, 105-E, / 150-E
- EK000MD102: P3 Activity Log Info: Utilize FMCL as Basis for ERW's / MEC Scope

| ID | WBS | Activity | Duration | Start | Finish | Predecessors | Complete | Planned start | Planned finish | zData Date | PCA Criticality Index | PCA Duration Sensitivity | EB02 - UNIT | EB01 - RESP | EB06 - WORK OP | EB03 - AREA | EB05 - DISCIPLINE | EB07 - REQN | EB10 - KEY | EB04 - CLASS | EB11 - FLAG | EB09 - IPMS | EB00 - EPC | EB17 - Suffix | EB21 - Rev 2 Risk Associations | EB14 - RISK | user_integer2 |
| --- | --- | --- | --- | --- | --- | --- | --- | --- | --- | --- | --- | --- | --- | --- | --- | --- | --- | --- | --- | --- | --- | --- | --- | --- | --- | --- | --- |
| EK000MD104 |  | MD305 Merc. Removal Bed - Technical Evaluation | 5d | 2006-02-13 A | 2006-03-01 A | PK000MD106 | 100% | 2006-03-06 | 2006-03-10 | 2006-07-29 | 0 | 0 | 00 | EK | MD3 | 000 | MD | MD305 | FE | MD | X | D | E | E4B4 | 03 |  |  |
| EK000MD105 |  | MD305 Merc. Removal Bed - Prepare & Issue Purchase ERW | 3d | 2006-03-01 A | 2006-03-03 A | EK000MD104, PK000MD107 FF, EK000MD103, EK000PR610 | 100% | 2006-02-27 | 2006-03-01 | 2006-07-29 | 0 | 0 | 00 | EK | MD3 | 000 | MD | MD305 | FE | MD | X | F | E | E4B4 | 03 |  |  |
|  | MJ | **Machinery Engineering** |  | 2005-03-07 | 2006-06-13 |  |  |  |  |  |  |  |  |  |  |  |  |  |  |  |  |  |  |  |  |  |  |
| EK000MJ005 |  | Prepare Machinery Specs (Motors, Pkg Equipment) | 30d | 2005-03-07 A | 2005-03-28 A | EK000IC015 FF, EK000YA002 SS | 100% | 2005-03-07 | 2005-04-15 | 2006-07-29 | 0 | 0 | 00 | EK | G10 | 000 | MJ |  |  | M | X |  | E |  |  |  |  |
| EK000MJ31C |  | Prepare & Issue Prelim. RFQ - MJ301 to Proc. | 5d | 2005-03-15 A | 2005-03-15 A | EK000YA002 SS | 100% | 2005-03-15 | 2005-03-21 | 2006-07-29 | 0 | 0 | 00 | EK | MJ3 | 000 | MJ | MJ301 | FE | M | X | A | E |  |  |  |  |
| EK000MJ32C |  | Prepare & Issue Prelim. RFQ - MJ302 to Proc. | 5d | 2005-03-15 A | 2005-03-15 A | EK000YA002 SS | 100% | 2005-03-15 | 2005-03-21 | 2006-07-29 | 0 | 0 | 00 | EK | MJ3 | 000 | MJ | MJ302 | FE | M | X | A | E |  |  |  |  |
| EK000MJ22B |  | Develop & Issue Design Data for ERW - MJ201 | 10d | 2005-03-21 A | 2005-03-25 A | EK000MJ22A | 100% | 2005-03-21 | 2005-04-01 | 2006-07-29 | 0 | 0 | 00 | EK | MJ2 | 000 | MJ | MJ201 | CE | M | X |  | E |  |  | 06 |  |
| EK000MJ22C |  | Prepare & Issue Prelim. RFQ - MJ201 to Proc. | 1d | 2005-03-21 A | 2005-03-21 A | EK000YA002 SS | 100% |  |  | 2006-07-29 | 0 | 0 | 00 | EK | MJ2 | 000 | MJ | MJ201 | CE | M | X | A | E |  |  | 06 |  |
| EK000MJ35C |  | Prepare & Issue Prelim. RFQ - MJ305 to Proc. | 10d | 2005-03-21 A | 2005-04-01 A | EK000YA002 SS | 100% |  |  | 2006-07-29 | 0 | 0 | 00 | EK | MJ3 | 000 | MJ | MJ305 | CE | M | X | A | E |  |  |  |  |
| EK000MJ36C |  | Prepare & Issue Prelim. RFQ - MJ306 to Proc. | 10d | 2005-03-21 A | 2005-04-01 A | EK000YA002 SS | 100% |  |  | 2006-07-29 | 0 | 0 | 00 | EK | MJ3 | 000 | MJ | MJ306 | PE | M | X | A | E |  |  |  |  |
| EK000MJ39C |  | Prepare & Issue Prelim. RFQ - MJ391 to Proc. | 5d | 2005-03-21 A | 2005-04-08 A | EK000YA002 SS | 100% | 2005-03-21 | 2005-03-25 | 2006-07-29 | 0 | 0 | 00 | EK | MJ3 | 000 | MJ | MJ391 | PE | M | X | A | E |  |  |  |  |
| EK000ML31C |  | Prepare & Issue Prelim. RFQ - ML313 to Proc. | 5d | 2005-03-21 A | 2005-03-25 A | EK000YA002 SS | 100% |  |  | 2006-07-29 | 0 | 0 | 00 | EK | ML3 | 000 | MJ | ML313 | FE | M | X | A | E |  |  |  |  |
| EK000MJ21C |  | Prepare & Issue Prelim. RFQ - MJ202 to Proc. | 1d | 2005-03-22 A | 2005-03-22 A | EK000MJ21A | 100% |  |  | 2006-07-29 | 0 | 0 | 00 | EK | MJ2 | 000 | MJ | MJ202 | CE | M | X | A | E |  |  | 06 |  |
| EK000ML50C |  | Prepare & Issue Prelim. RFQ - ML500 to Proc. | 5d | 2005-03-22 A | 2005-03-28 A | EK000YA002 SS | 100% |  |  | 2006-07-29 | 0 | 0 | 00 | EK | ML5 | 000 | MJ | ML500 | FE | M | X | A | E |  |  |  |  |
| EK000MJ21B |  | Develop & Issue Design Data for ERW - MJ202 | 12d | 2005-03-24 A | 2005-04-06 A | EK000MJ21A | 100% | 2005-03-24 | 2005-04-08 | 2006-07-29 | 0 | 0 | 00 | EK | MJ2 | 000 | MJ | MJ202 | CE | M | X |  | E |  |  | 06 |  |
| EK000MJ22F |  | Update/Issue Formal Inquiry for ERW - MJ201 | 20d | 2005-03-28 A | 2005-04-08 A | EK000MJ22B, EK000MJ005 SS | 100% | 2005-03-28 | 2005-04-22 | 2006-07-29 | 0 | 0 | 00 | EK | MJ2 | 000 | MJ | MJ201 | CE | M | X |  | E |  |  | 06 |  |
| EK000MJ21D |  | Technical Evaluation - MJ202 | 5d | 2005-04-04 A | 2005-04-04 A | PK000MJ21H SS | 100% | 2005-04-04 | 2005-04-08 | 2006-07-29 | 0 | 0 | 00 | EK | MJ2 | 000 | MJ | MJ202 | CE | M | X | D | E |  |  | 06 |  |
| EK000ML42C |  | Prepare & Issue Prelim. RFQ - ML420 to Proc. | 5d | 2005-04-04 A | 2005-04-08 A | EK000YA002 SS | 100% |  |  | 2006-07-29 | 0 | 0 | 00 | EK | ML4 | 000 | MJ | ML420 | FE | M | X | A | E |  |  |  |  |
| EK000MU33C |  | Prepare & Issue Prelim. RFQ - MU330 to Proc. | 5d | 2005-04-04 A | 2005-04-08 A | EK000YA002 SS | 100% |  |  | 2006-07-29 | 0 | 0 | 00 | EK | MU3 | 000 | MJ | MU330 | FE | M | X | A | E |  |  |  |  |
| EK000ML50F |  | Update/Issue Formal Inquiry for ERW - ML500 | 20d | 2005-04-05 A | 2005-05-27 A | EK000ML50B, EK000MJ005 | 100% | 2005-04-05 | 2005-05-02 | 2006-07-29 | 0 | 0 | 00 | EK | ML5 | 000 | MJ | ML500 | FE | M | X |  | E |  |  |  |  |
| EK000MJ21F |  | Update/Issue Formal Inquiry for ERW - MJ202 | 25d | 2005-04-07 A | 2005-04-12 A | EK000MJ21B | 100% | 2005-04-07 | 2005-05-11 | 2006-07-29 | 0 | 0 | 00 | EK | MJ2 | 000 | MJ | MJ202 | CE | M | X |  | E |  |  | 06 |  |
| EK000MJ31B |  | Develop & Issue Design Data for ERW - MJ301 | 5d | 2005-04-07 A | 2005-05-13 A | EK000MJ21B, EK000MJ31A | 100% | 2005-04-07 | 2005-04-13 | 2006-07-29 | 0 | 0 | 00 | EK | MJ3 | 000 | MJ | MJ301 | FE | M | X |  | E |  |  |  |  |
| EK000MU41F |  | Develop & Issue Inquiry for ERW - MU410 | 20d | 2005-04-11 A | 2005-04-15 A | EK000MU41A SS | 100% | 2005-04-11 | 2005-05-06 | 2006-07-29 | 0 | 0 | 00 | EK | MU4 | 000 | MJ | MU410 | PE | M | X | A | E |  |  | 05 |  |
| EK000MJ22D |  | Technical Evaluation - MJ201 | 5d | 2005-04-15 A | 2005-04-18 A | PK000MJ22H | 100% | 2005-04-15 | 2005-04-21 | 2006-07-29 | 0 | 0 | 00 | EK | MJ2 | 000 | MJ | MJ201 | CE | M | X | D | E |  |  | 06 |  |
| EK000ML31F |  | Update/Issue Formal Inquiry for ERW - ML313 | 15d | 2005-04-15 A | 2005-04-15 A | EK000ML31B, EK000MJ005 SS | 100% | 2005-04-15 | 2005-05-05 | 2006-07-29 | 0 | 0 | 00 | EK | ML3 | 000 | MJ | ML313 | FE | M | X |  | E |  |  |  |  |
| EK000MU30F |  | Develop & Issue Inquiry for ERW - MU300 | 20d | 2005-04-18 A | 2005-04-25 A | EK000MU30B, EK000MJ005 | 100% | 2005-04-18 | 2005-05-13 | 2006-07-29 | 0 | 0 | 00 | EK | MU3 | 000 | MJ | MU300 | FE | M | X | A | E |  |  | 09 |  |
| EK000ML42F |  | Update/Issue Formal Inquiry for ERW - ML420 | 15d | 2005-04-19 A | 2005-05-25 A | EK000ML42B, EK000MJ005 SS | 100% | 2005-06-03 | 2005-06-23 | 2006-07-29 | 0 | 0 | 00 | EK | ML4 | 000 | MJ | ML420 | NE | M | X | A | E |  |  |  |  |
| EK000MU61F |  | Develop & Issue Inquiry for ERW - MU611 | 20d | 2005-04-20 A | 2005-04-25 A | EK000MU61B, EK000MJ005 SS | 100% | 2005-05-16 | 2005-06-13 | 2006-07-29 | 0 | 0 | 00 | EK | MU6 | 000 | MJ | MU611 | PE | M | X |  | E |  |  |  |  |
| EK000MJ32B |  | Develop & Issue Design Data for ERW - MJ302 | 8d | 2005-04-20 A | 2005-05-13 A | EK000MJ32A | 100% | 2005-04-20 | 2005-04-29 | 2006-07-29 | 0 | 0 | 00 | EK | MJ3 | 000 | MJ | MJ302 | FE | M | X |  | E |  |  |  |  |
| EK000MU35F |  | Update/Issue Formal Inquiry for ERW - MU350 | 15d | 2005-04-20 A | 2005-04-21 A | EK000MU35A | 100% | 2005-04-20 | 2005-05-10 | 2006-07-29 | 0 | 0 | 00 | EK | MU3 | 000 | MJ | MU350 | FE | M | X |  | E |  |  |  |  |
| EK000MJ39B |  | Develop/Issue Load Sht & Design Data ERW - MJ391 | 3d | 2005-04-25 A | 2005-04-29 A | EK000MJ34B, EK000SY015, EK000SY075 SS+30d | 100% | 2005-05-23 | 2005-05-25 | 2006-07-29 | 0 | 0 | 00 | EK | MJ3 | 000 | MJ | MJ391 | PE | M | X |  | E |  |  |  |  |
| EK000ML50D |  | Technical Evaluation - ML500 | 10d | 2005-04-25 A | 2005-05-27 A | PK000ML50H, PK000ML90H | 100% | 2005-05-09 | 2005-05-20 | 2006-07-29 | 0 | 0 | 00 | EK | ML5 | 000 | MJ | ML500 | FE | M | X | D | E |  |  |  |  |
| EK000MU33F |  | Update/Issue Formal Inquiry for ERW - MU330 | 13d | 2005-04-25 A | 2005-05-04 A | EK000MU33B, EK000MJ005 | 100% | 2005-04-18 | 2005-05-04 | 2006-07-29 | 0 | 0 | 00 | EK | MU3 | 000 | MJ | MU330 | FE | M | X |  | E |  |  |  |  |
| EK000MJ35D |  | Technical Evaluation - MJ305 | 5d | 2005-04-26 A | 2005-05-02 A | PK000MJ35H | 100% |  |  | 2006-07-29 | 0 | 0 | 00 | EK | MJ3 | 000 | MJ | MJ305 | CE | M | X | D | E |  |  |  |  |
| EK000MJ36D |  | Technical Evaluation - MJ306 | 5d | 2005-04-26 A | 2005-05-02 A | PK000MJ36H | 100% |  |  | 2006-07-29 | 0 | 0 | 00 | EK | MJ3 | 000 | MJ | MJ306 | PE | M | X | D | E |  |  |  |  |
| EK000MJ34B |  | Develop/Issue Load Sht & Design Data ERW - MJ304 | 5d | 2005-05-02 A | 2005-05-09 A | EK000SY015, EK000SY075 SS+30d | 100% | 2005-05-23 | 2005-05-27 | 2006-07-29 | 0 | 0 | 00 | EK | MJ3 | 000 | MJ | MJ304 | FE | M | X |  | E |  |  |  |  |
| EK000MJ39F |  | Update/Issue Formal Inquiry for ERW - MJ391 | 15d | 2005-05-02 A | 2005-05-27 A | EK000MJ39B, EK000MJ005 SS | 100% | 2005-05-20 | 2005-06-10 | 2006-07-29 | 0 | 0 | 00 | EK | MJ3 | 000 | MJ | MJ391 | PE | M | X |  | E |  |  |  |  |
| EK000MJ35B |  | Develop & Issue Design Data for ERW - MJ305 | 5d | 2005-05-05 A | 2005-06-08 A | EK000MJ32B SS+5d, EK000MJ35A | 100% | 2005-05-05 | 2005-05-11 | 2006-07-29 | 0 | 0 | 00 | EK | MJ3 | 000 | MJ | MJ305 | CE | M | X |  | E |  |  |  |  |
| EK000ML31D |  | Technical Evaluation - ML313 | 10d | 2005-05-06 A | 2005-05-20 A | PK000ML31H | 100% | 2005-05-10 | 2005-05-23 | 2006-07-29 | 0 | 0 | 00 | EK | ML3 | 000 | MJ | ML313 | FE | M | X | D | E |  |  |  |  |
| EK000MU35D |  | Technical Evaluation - MU350 | 10d | 2005-05-09 A | 2005-05-20 A | PK000MU35H | 100% | 2005-05-27 | 2005-06-10 | 2006-07-29 | 0 | 0 | 00 | EK | MU3 | 000 | MJ | MU350 | FE | M | X | D | E |  |  |  |  |
| EK000MJ34F |  | Update/Issue Formal Inquiry for ERW - MJ304 | 15d | 2005-05-10 A | 2005-05-26 A | EK000MJ34B, EK000MJ005 SS | 100% | 2005-05-20 | 2005-06-10 | 2006-07-29 | 0 | 0 | 00 | EK | MJ3 | 000 | MJ | MJ304 | FE | M | X |  | E |  |  |  |  |
| EK000ML42D |  | Technical Evaluation - ML420 | 2d | 2005-05-10 A | 2005-05-20 A | PK000ML42H | 100% | 2005-06-03 | 2005-06-06 | 2006-07-29 | 0 | 0 | 00 | EK | ML4 | 000 | MJ | ML420 | NE | M | X | D | E |  |  |  |  |
| EK000MJ33B |  | Develop/Issue Load Sht & Design Data ERW - MJ303 | 3d | 2005-05-12 A | 2005-06-23 A | EK000SY015, EK000SY075 SS+30d | 100% | 2005-05-23 | 2005-05-25 | 2006-07-29 | 0 | 0 | 00 | EK | MJ3 | 000 | MJ | MJ303 | FE | M | X |  | E |  |  |  |  |
| EK000MJ31D |  | Technical Evaluation - MJ301 | 15d | 2005-05-13 A | 2005-05-26 A | PK000MJ31H | 100% | 2005-06-06 | 2005-06-24 | 2006-07-29 | 0 | 0 | 00 | EK | MJ3 | 000 | MJ | MJ301 | FE | M | X | D | E |  |  |  |  |
| EK000MJ32D |  | Technical Evaluation - MJ302 | 15d | 2005-05-13 A | 2005-05-20 A | PK000MJ32H | 100% | 2005-06-06 | 2005-06-24 | 2006-07-29 | 0 | 0 | 00 | EK | MJ3 | 000 | MJ | MJ302 | FE | M | X | D | E |  |  |  |  |
| EK000MJ37B |  | Develop & Issue Design Data for ERW - MJ340 | 5d | 2005-05-20 A | 2005-06-08 A | EK000MJ35B FF, EK000MJ37A | 100% | 2005-05-31 | 2005-06-06 | 2006-07-29 | 0 | 0 | 00 | EK | MJ3 | 000 | MJ | MJ340 | NE | M | X |  | E |  |  |  |  |
| EK000MJ73B |  | Develop/Issue Load Sht & Design Data ERW - MJ730 | 5d | 2005-05-20 A | 2005-05-31 A | EK000SY015, EK000SY075 SS+10d | 100% | 2005-05-20 | 2005-05-26 | 2006-07-29 | 0 | 0 | 00 | EK | MJ7 | 000 | MJ | MJ730 | PE | M | X |  | E |  |  |  |  |
| EK000MJ31F |  | Update/Issue Formal Inquiry for ERW - MJ301 | 15d | 2005-05-27 A | 2005-06-08 A | EK000MJ31B, EK000MJ005 SS | 100% | 2005-05-27 | 2005-06-17 | 2006-07-29 | 0 | 0 | 00 | EK | MJ3 | 000 | MJ | MJ301 | FE | M | X | A | E |  |  |  |  |
| EK000MJ32F |  | Update/Issue Formal Inquiry for ERW - MJ302 | 15d | 2005-05-27 A | 2005-06-28 A | EK000MJ32B, EK000MJ005 SS | 100% | 2005-05-27 | 2005-06-17 | 2006-07-29 | 0 | 0 | 00 | EK | MJ3 | 000 | MJ | MJ302 | FE | M | X | A | E |  |  |  |  |
| EK000MJ36B |  | Develop/Issue Load Sht & Design Data ERW - MJ306 | 3d | 2005-05-27 A | 2005-07-08 A | EK000MJ39B, EK000SY015, EK000SY075 SS+30d | 100% | 2005-05-27 | 2005-06-01 | 2006-07-29 | 0 | 0 | 00 | EK | MJ3 | 000 | MJ | MJ306 | PE | M | X |  | E |  |  |  |  |
| EK000ML33F |  | Develop & Issue Inquiry for ERW - ML330 | 15d | 2005-05-27 A | 2005-06-13 A | EK000ML33B, EK000MJ005 SS | 100% | 2005-05-27 | 2005-06-17 | 2006-07-29 | 0 | 0 | 00 | EK | ML3 | 000 | MJ | ML330 | NE | M | X | A | E |  |  |  |  |
| EK000ML51F |  | Develop & Issue Inquiry for ERW - ML512 | 20d | 2005-05-27 A | 2005-06-01 A | EK000ML51B FF, EK000MJ005 | 100% | 2005-05-27 | 2005-06-24 | 2006-07-29 | 0 | 0 | 00 | EK | ML5 | 000 | MJ | ML512 | FE | M | X | A | E |  |  |  |  |
| EK000MJ73F |  | Develop & Issue Inquiry for ERW - MJ730 | 20d | 2005-05-31 A | 2005-07-13 A | EK000MJ73B, EK000MJ005 SS | 100% | 2005-05-31 | 2005-06-27 | 2006-07-29 | 0 | 0 | 00 | EK | MJ7 | 000 | MJ | MJ730 | PE | M | X | A | E |  |  |  |  |
| EK000MJ75B |  | Develop & Issue Design Data for ERW - MJ750 | 9d | 2005-05-31 A | 2005-06-20 A | EK000MJ75A | 100% | 2005-05-31 | 2005-06-10 | 2006-07-29 | 0 | 0 | 00 | EK | MJ7 | 000 | MJ | MJ750 | PE | M | X |  | E |  |  |  |  |
| EK000MJ34D |  | Technical Evaluation - MJ304 | 5d | 2005-06-02 A | 2005-06-03 A | PK000MJ34H | 100% | 2005-06-24 | 2005-06-30 | 2006-07-29 | 0 | 0 | 00 | EK | MJ3 | 000 | MJ | MJ304 | FE | M | X | D | E |  |  |  |  |
| EK000MU41D |  | Technical Evaluation - MU410 | 5d | 2005-06-03 A | 2005-07-29 A | PK000MU41H, EK000MU41B | 100% | 2005-05-27 | 2005-06-03 | 2006-07-29 | 0 | 0 | 00 | EK | MU4 | 000 | MJ | MU410 | PE | M | X | D | E |  |  | 05 | 13 |
| EK000MU61D |  | Technical Evaluation - MU611 | 5d | 2005-06-06 A | 2005-07-21 A | PK000MU61H | 100% | 2005-06-06 | 2005-06-10 | 2006-07-29 | 0 | 0 | 00 | EK | MU6 | 000 | MJ | MU611 | PE | M | X | D | E |  |  |  |  |
| EK000MJ37F |  | Develop & Issue Inquiry for ERW - MJ340 | 15d | 2005-06-09 A | 2005-07-06 A | EK000MJ37B, EK000MJ005 SS | 100% | 2005-06-03 | 2005-06-23 | 2006-07-29 | 0 | 0 | 00 | EK | MJ3 | 000 | MJ | MJ340 | NE | M | X | A | E |  |  |  |  |
| EK000MJ35F |  | Update/Issue Formal Inquiry for ERW - MJ305 | 11d | 2005-06-09 A | 2005-06-23 A | EK000MJ35B, EK000MJ005 SS | 100% |  |  | 2006-07-29 | 0 | 0 | 00 | EK | MJ3 | 000 | MJ | MJ305 | CE | M | X | A | E |  |  |  |  |
| EK000MU30D |  | Technical Evaluation - MU300 | 5d | 2005-06-13 A | 2005-10-28 A | PK000MU30H | 100% | 2005-06-06 | 2005-06-10 | 2006-07-29 | 0 | 0 | 00 | EK | MU3 | 000 | MJ | MU300 | FE | M | X | D | E |  |  | 09 | 23 |
| EK000MJ75F |  | Develop & Issue Inquiry for ERW - MJ750 | 15d | 2005-06-21 A | 2005-06-28 A | EK000MJ75B, EK000MJ005 SS | 100% | 2005-06-03 | 2005-06-23 | 2006-07-29 | 0 | 0 | 00 | EK | MJ7 | 000 | MJ | MJ750 | PE | M | X | A | E |  |  |  |  |
| EK000MJ33F |  | Develop & Issue Inquiry for ERW - MJ303 | 14d | 2005-06-27 A | 2005-07-19 A | EK000MJ33B FS+2d, EK000MJ005 SS | 100% | 2005-06-27 | 2005-07-18 | 2006-07-29 | 0 | 0 | 00 | EK | MJ3 | 000 | MJ | MJ303 | FE | M | X | A | E |  |  |  |  |
| EK000MJ36F |  | Update/Issue Formal Inquiry for ERW - MJ306 | 15d | 2005-06-27 A | 2005-07-20 A | EK000MJ36B, EK000MJ005 SS | 100% | 2005-06-27 | 2005-07-19 | 2006-07-29 | 0 | 0 | 00 | EK | MJ3 | 000 | MJ | MJ306 | PE | M | X | A | E |  |  |  |  |
| EK000MJ75D |  | Technical Evaluation - MJ750 | 5d | 2005-06-29 A | 2005-06-30 A | PK000MJ75H | 100% | 2005-06-28 | 2005-07-06 | 2006-07-29 | 0 | 0 | 00 | EK | MJ7 | 000 | MJ | MJ750 | PE | M | X | D | E |  |  |  |  |
| EK000ML43F |  | Develop & Issue Inquiry for ERW - ML430 | 15d | 2005-07-01 A | 2005-07-07 A | EK000ML43A FS+2d, EK000MJ005 | 100% | 2005-06-27 | 2005-07-19 | 2006-07-29 | 0 | 0 | 00 | EK | ML4 | 000 | MJ | ML430 | NE | M | X | A | E |  |  |  |  |
| EK000MU33D |  | Technical Evaluation - MU330 | 19d | 2005-07-05 A | 2005-08-01 A | PK000MU33H | 100% | 2005-06-27 | 2005-07-25 | 2006-07-29 | 0 | 0 | 00 | EK | MU3 | 000 | MJ | MU330 | FE | M | X | D | E |  |  |  |  |
| EK000MU22F |  | Develop & Issue Inquiry for ERW - MU222 | 19d | 2005-07-05 A | 2005-07-27 A | EK000MU22B FS+9d, EK000MJ005 | 100% | 2005-07-05 | 2005-07-29 | 2006-07-29 | 0 | 0 | 00 | EK | MU2 | 000 | MJ | MU222 | NE | M | X | A | E |  |  |  |  |
| EK000MU21F |  | Develop & Issue Inquiry for ERW - MU221 | 19d | 2005-07-27 A | 2005-08-03 A | EK000MU21B FS+2d, EK000MJ005 | 100% | 2005-08-15 | 2005-09-08 | 2006-07-29 | 0 | 0 | 00 | EK | MU2 | 000 | MJ | MU221 | NE | M | X | A | E |  |  |  |  |
| EK000ML33D |  | Technical Evaluation - ML330 | 25d | 2005-08-10 A | 2005-09-22 A | PK000ML33H | 100% | 2005-08-29 | 2005-09-30 | 2006-07-29 | 0 | 0 | 00 | EK | ML3 | 000 | MJ | ML330 | NE | M | X | D | E |  |  |  |  |
| EK000ML43D |  | Technical Evaluation - ML430 | 11d | 2005-08-10 A | 2005-10-07 A | PK000ML43H | 100% | 2005-08-29 | 2005-09-12 | 2006-07-29 | 0 | 0 | 00 | EK | ML4 | 000 | MJ | ML430 | NE | M | X | D | E |  |  |  |  |

Notes:
- EK000MJ31C: P3 Activity Log Info: Utilize FMCL as Basis for ERW's
- EK000MJ32C: P3 Activity Log Info: Utilize FMCL as Basis for ERW's
- EK000MJ22B: P3 Activity Log Info: Process Air Compressor 101-J
- EK000MJ22C: P3 Activity Log Info: Utilize FMCL as Basis for ERW's
- EK000MJ35C: P3 Activity Log Info: Utilize FMCL as Basis for ERW's
- EK000MJ36C: P3 Activity Log Info: Utilize FMCL as Basis for ERW's
- EK000MJ39C: P3 Activity Log Info: Utilize FMCL as Basis for ERW's / Actual
- EK000ML31C: P3 Activity Log Info: Utilize FMCL as Basis for ERW's
- EK000MJ21C: P3 Activity Log Info: Utilize FMCL as Basis for ERW's
- EK000ML50C: P3 Activity Log Info: Utilize FMCL as Basis for ERW's
- EK000MJ21B: P3 Activity Log Info: Compressors 102/3/5-J / Actual
- EK000MJ22F: P3 Activity Log Info: Process Air Compressor 101-J
- EK000ML42C: P3 Activity Log Info: Utilize FMCL as Basis for ERW's
- EK000MU33C: P3 Activity Log Info: Utilize FMCL as Basis for ERW's
- EK000MJ31B: P3 Activity Log Info: 104-J BFW Pumps
- EK000MJ32B: P3 Activity Log Info: Lean Solution Pumps / 107-J
- EK000MJ39B: P3 Activity Log Info: FW / Pumps
- EK000MJ35D: P3 Activity Log Info: Using ISSP (Goulds) / Not Required
- EK000MJ36D: P3 Activity Log Info: Using ISSP (Goulds) / Not Required
- EK000MJ34B: P3 Activity Log Info: MP BFW Pumps
- EK000MJ35B: P3 Activity Log Info: ISBL Pumps
- EK000MJ33B: P3 Activity Log Info: Cooling Water Pumps
- EK000MJ37B: P3 Activity Log Info: Metering Pumps
- EK000MJ73B: P3 Activity Log Info: Emergency Power Generator 2303-J / Need Loads Identified
- EK000MJ36B: P3 Activity Log Info: OSBL / Pumps
- EK000MJ75B: P3 Activity Log Info: Surface Condensers

| ID | Activity | Duration | Start | Finish | Predecessors | Complete | Planned start | Planned finish | Calendar | zData Date | PCA Criticality Index | PCA Duration Sensitivity | EB02 - UNIT | EB01 - RESP | EB06 - WORK OP | EB03 - AREA | EB05 - DISCIPLINE | EB07 - REQN | EB10 - KEY | EB04 - CLASS | EB11 - FLAG | EB09 - IPMS | EB00 - EPC | user_integer2 | EB14 - RISK | EB08 - TAG | EB21 - Rev 2 Risk Associations |
| --- | --- | --- | --- | --- | --- | --- | --- | --- | --- | --- | --- | --- | --- | --- | --- | --- | --- | --- | --- | --- | --- | --- | --- | --- | --- | --- | --- |
| EK000MU22D | Technical Evaluation - MU222 | 5d | 2005-08-22 A | 2005-10-07 A | PK000MU22H | 100% | 2005-09-19 | 2005-09-23 |  | 2006-07-29 | 0 | 0 | 00 | EK | MU2 | 000 | MJ | MU222 | NE | M | X | D | E |  |  |  |  |
| EK000MJ37D | Technical Evaluation - MJ340 | 5d | 2005-08-24 A | 2005-09-28 A | PK000MJ37H | 100% | 2005-08-29 | 2005-09-02 |  | 2006-07-29 | 0 | 0 | 00 | EK | MJ3 | 000 | MJ | MJ340 | NE | M | X | D | E |  |  |  |  |
| EK000MJ39D | Technical Evaluation - MJ391 | 5d | 2005-08-24 A | 2006-01-20 A | PK000MJ39H | 100% | 2005-08-24 | 2005-08-30 |  | 2006-07-29 | 0 | 0 | 00 | EK | MJ3 | 000 | MJ | MJ391 | PE | M | X | D | E |  |  |  |  |
| EK000MJ31X | Technical Evaluation - MJ301 | 9d | 2005-08-25 A | 2005-09-09 A | PK000MJ31H, PK000MJ31M SS | 100% | 2005-08-29 | 2005-09-08 |  | 2006-07-29 | 0 | 0 | 00 | EK | MJ3 | 000 | MJ | MJ301 | FE | M | X | D | E |  |  |  |  |
| PK000MJ32X | Technical Evaluation - MJ302 | 9d | 2005-08-25 A | 2005-09-09 A | PK000MJ32M SS | 100% | 2005-08-29 | 2005-09-08 |  | 2006-07-29 | 0 | 0 | 00 | EK | MJ3 | 000 | MJ | MJ302 | FE | M | X | D | E |  |  |  |  |
| EK000MU11L | 05B MU311 Define Chemical Treatment Requirements | 10d | 2005-08-29 A | 2005-09-09 A | EK000MU11O | 100% | 2006-02-27 | 2006-03-10 | EBWK - Global | 2006-07-29 | 0 | 0 | 00 | EK | MU3 | 000 | MU | MU311 |  | M |  |  | E |  |  |  |  |
| EK000MU25L | 02G MU225 Define Chemical Treatment Requirements | 10d | 2005-08-29 A | 2005-09-09 A | EK000MU25O | 100% | 2006-02-27 | 2006-03-10 | EBWK - Global | 2006-07-29 | 0 | 0 | 00 | EK | MU2 | 000 | MJ | MU225 |  | M |  |  | E |  |  |  |  |
| EK000MU32L | 01D MU322 Define Chemical Treatment Requirements | 10d | 2005-08-29 A | 2005-09-09 A | EK000MU32O | 100% | 2006-02-27 | 2006-03-10 | EBWK - Global | 2006-07-29 | 0 | 0 | 00 | EK | MU3 | 000 | MJ | MU322 |  | M |  |  | E |  |  |  |  |
| EK000ML51D | Technical Evaluation - ML512 | 11d | 2005-08-29 A | 2005-09-19 A | PK000ML51H | 100% | 2005-08-29 | 2005-09-12 |  | 2006-07-29 | 0 | 0 | 00 | EK | ML5 | 000 | MJ | ML512 | FE | M | X | D | E |  |  |  |  |
| EK000MU21D | Technical Evaluation - MU221 | 9d | 2005-08-29 A | 2005-10-14 A | PK000MU21H | 100% | 2005-08-29 | 2005-09-08 |  | 2006-07-29 | 0 | 0 | 00 | EK | MU2 | 000 | MJ | MU221 | NE | M | X | D | E |  |  |  |  |
| EK000MU31L | Define Chemical Treatment Requirements - MU310 | 10d | 2005-08-29 A | 2005-09-09 A | EK000MU310 | 100% |  |  |  | 2006-07-29 | 0 | 0 | 00 | EK | MU3 | 000 | MJ | MU310 |  | M | X |  | E |  |  |  |  |
| EK000MU35E | Prepare & Issue Purchase ERW - MU350 | 20d | 2005-09-01 A | 2005-09-13 A | EK000MU35D, EK000MU35F, PK000MU35I FF, PK000MU35J | 100% | 2005-09-12 | 2005-10-07 |  | 2006-07-29 | 0 | 0 | 00 | EK | MU3 | 000 | MJ | MU350 | FE | M | X | F | E |  |  |  |  |
| EK000MJ73D | Technical Evaluation - MJ730 | 6d | 2005-09-06 A | 2005-10-17 A | PK000MJ73H | 100% | 2005-10-28 | 2005-11-04 |  | 2006-07-29 | 0 | 0 | 00 | EK | MJ7 | 000 | MJ | MJ730 | PE | M | X | D | E |  |  |  |  |
| PK000MJ21N | Recv. Planning V. Data MJ202 | 30d | 2005-09-09 A | 2005-09-30 A | PK000MJ21J | 100% | 2005-09-26 | 2005-11-04 |  | 2006-07-29 | 0 | 0 | 00 | EK | MJ2 | 000 | MJ | MJ202 | P15 | M | X | J | E | 30 | 10 |  |  |
| PK000MJ75N | Recv. Planning V. Data MJ750 | 20d | 2005-09-09 A | 2005-09-30 A | PK000MJ75J | 100% | 2005-09-26 | 2005-10-21 |  | 2006-07-29 | 0 | 0 | 00 | EK | MJ7 | 000 | MJ | MJ750 | P15 | M |  | J | E | 20 | 10 |  |  |
| PK000ML31N | Recv. Planning V. Data ML313 | 20d | 2005-09-09 A | 2005-10-13 A | PK000ML31J | 100% | 2005-10-03 | 2005-10-28 |  | 2006-07-29 | 0 | 0 | 00 | EK | ML3 | 000 | MJ | ML313 | P15 | M | X | J | E | 20 | 15 |  |  |
| EK000MJ21E | Prepare & Issue Purchase ERW - MJ202 | 36d | 2005-09-12 A | 2005-09-30 A | EK000MJ21D, EK000MJ21F, PK000MJ21I, PK000MJ21J FF | 100% | 2005-09-26 | 2005-11-14 |  | 2006-07-29 | 0 | 0 | 00 | EK | MJ2 | 000 | MJ | MJ202 | CE | M | X | F | E | 35 | 06 |  |  |
| PK000MU35N | Recv. Planning V. Data MU350 | 20d | 2005-09-12 A | 2005-10-27 A | PK000MU35J | 100% | 2005-09-26 | 2005-10-21 |  | 2006-07-29 | 0 | 0 | 00 | EK | MU3 | 000 | MJ | MU350 | P15 | M |  | J | E |  |  |  |  |
| EK000MU61E | Prepare & Issue Purchase ERW - MU611 | 20d | 2005-09-12 A | 2005-09-16 A | EK000MU61D, EK000MU61F, PK000MU61I FF, PK000MU61J | 100% | 2005-09-12 | 2005-10-07 |  | 2006-07-29 | 0 | 0 | 00 | EK | MU6 | 000 | MJ | MU611 | PE | M | X | F | E |  |  |  |  |
| EK000MJ75E | Prepare & Issue Purchase ERW - MJ750 | 6d | 2005-09-19 A | 2005-10-28 A | EK000MJ75D, PK000MJ75I | 100% | 2005-09-12 | 2005-09-19 |  | 2006-07-29 | 0 | 0 | 00 | EK | MJ7 | 000 | MJ | MJ750 | PE | M | X | F | E |  |  |  |  |
| PK000MJ35N | Recv. Planning V. Data MJ305 | 20d | 2005-09-23 A | 2005-10-28 A | PK000MJ35J | 100% | 2005-10-17 | 2005-11-11 |  | 2006-07-29 | 0 | 0 | 00 | EK | MJ3 | 000 | MJ | MJ305 | P15 | M |  | J | E | 20 | 10 |  |  |
| PK000MJ36N | Recv. Planning V. Data MJ306 | 20d | 2005-09-23 A | 2005-10-28 A | PK000MJ36J | 100% | 2005-10-17 | 2005-11-11 |  | 2006-07-29 | 0 | 0 | 00 | EK | MJ3 | 000 | MJ | MJ306 | P15 | M |  | J | E | 20 | 10 |  |  |
| EK000MJ33D | Technical Evaluation - MJ303 | 15d | 2005-09-30 A | 2006-01-19 A | PK000MJ33H | 100% | 2005-10-21 | 2005-11-11 |  | 2006-07-29 | 0 | 0 | 00 | EK | MJ3 | 000 | MJ | MJ303 | FE | M | X | D | E |  |  |  |  |
| PK000MU21N | Recv. Planning V. Data MU221 | 20d | 2005-10-02 A | 2005-10-28 A | PK000MU21J SS | 100% | 2005-11-02 | 2005-11-29 |  | 2006-07-29 | 0 | 0 | 00 | EK | MU2 | 000 | MJ | MU221 | P15 | M |  | J | E |  |  |  |  |
| PK000MJ32N | Recv. Planning V. Data MJ302 | 20d | 2005-10-03 A | 2005-10-28 A | PK000MJ32J SS | 100% | 2005-11-03 | 2005-11-30 |  | 2006-07-29 | 0 | 0 | 00 | EK | MJ3 | 000 | MJ | MJ302 | P15 | M | X | J | E | 20 | 10 |  |  |
| PK000MJ34N | Recv. Planning V. Data MJ304 | 20d | 2005-10-03 A | 2005-10-28 A | PK000MJ34J SS | 100% | 2005-11-01 | 2005-11-28 |  | 2006-07-29 | 0 | 0 | 00 | EK | MJ3 | 000 | MJ | MJ304 | P15 | M |  | J | E | 20 | 10 |  |  |
| PK000MJ37N | Recv. Planning V. Data MJ340 | 20d | 2005-10-03 A | 2005-10-28 A | PK000MJ37J | 100% | 2005-11-11 | 2005-12-08 |  | 2006-07-29 | 0 | 0 | 00 | EK | MJ3 | 000 | MJ | MJ340 | P15 | M |  | J | E | 20 | 10 |  |  |
| PK000MJ39N | Recv. Planning V. Data MJ391 | 20d | 2005-10-03 A | 2005-10-28 A | PK000MJ39M SF | 100% | 2005-11-04 | 2005-12-01 |  | 2006-07-29 | 0 | 0 | 00 | EK | MJ3 | 000 | MJ | MJ391 | P15 | M |  | J | E | 20 | 10 |  |  |
| PK000MJ73N | Recv. Planning V. Data MJ730 | 20d | 2005-10-03 A | 2005-10-28 A | PK000MJ73I SS+15d | 100% | 2005-11-03 | 2005-11-30 |  | 2006-07-29 | 0 | 0 | 00 | EK | MJ7 | 000 | MJ | MJ730 | P15 | M |  | J | E | 20 | 10 |  |  |
| PK000ML42N | Recv. Planning V. Data ML420 | 20d | 2005-10-03 A | 2005-10-27 A | PK000ML42J | 100% | 2005-11-11 | 2005-12-08 |  | 2006-07-29 | 0 | 0 | 00 | EK | ML4 | 000 | MJ | ML420 | P15 | M |  | J | E | 20 | 15 |  |  |
| PK000MU22N | Recv. Planning V. Data MU222 | 20d | 2005-10-03 A | 2005-10-28 A | PK000MU22J SS | 100% | 2005-11-02 | 2005-11-29 |  | 2006-07-29 | 0 | 0 | 00 | EK | MU2 | 000 | MJ | MU222 | P15 | M |  | J | E |  |  |  |  |
| EK000MU41E | Prepare & Issue Purchase ERW - MU410 | 5d | 2005-10-03 A | 2005-10-06 A | EK000MU41F, PK000MU41I FF, PK000MU41J FF | 100% | 2005-10-03 | 2005-10-07 |  | 2006-07-29 | 0 | 0 | 00 | EK | MU4 | 000 | MJ | MU410 | PE | M | X | F | E | 20 | 05 |  |  |
| PK000MU61N | Recv. Planning V. Data MU611 | 20d | 2005-10-03 A | 2005-10-26 A | PK000MU61J, PK000MU61P | 100% | 2005-10-03 | 2005-10-28 |  | 2006-07-29 | 0 | 0 | 00 | EK | MU6 | 000 | MJ | MU611 | P15 | M |  | J | E |  |  |  |  |
| PK000MJ22N | Recv. Planning V. Data MJ201 | 30d | 2005-10-06 A | 2005-10-28 A | PK000MJ22J | 100% | 2005-10-17 | 2005-11-25 |  | 2006-07-29 | 0 | 0 | 00 | EK | MJ2 | 000 | MJ | MJ201 | P15 | M | X | J | E | 30 | 10 |  |  |
| PK000MJ31N | Recv. Planning V. Data MJ301 | 30d | 2005-10-07 A | 2005-10-28 A | PK000MJ31J | 100% | 2005-11-03 | 2005-12-14 |  | 2006-07-29 | 0 | 0 | 00 | EK | MJ3 | 000 | MJ | MJ301 | P15 | M | X | J | E | 20 | 10 |  |  |
| EK000ML51E | Prepare & Issue Purchase ERW - ML512 | 11d | 2005-10-12 A | 2005-10-26 A | PK000ML51J FF+5d, PK000ML51P | 100% | 2005-11-03 | 2005-11-18 |  | 2006-07-29 | 0 | 0 | 00 | EK | ML5 | 000 | MJ | ML512 | FE | M | X | F | E |  |  |  |  |
| PK000ML51N | Recv. Planning V. Data ML512 | 20d | 2005-10-12 A | 2005-10-28 A | PK000ML51J | 100% | 2005-10-17 | 2005-11-11 |  | 2006-07-29 | 0 | 0 | 00 | EK | ML5 | 000 | MJ | ML512 | P15 | M |  | J | E | 20 | 15 |  |  |
| EK000MJ22E | Prepare & Issue Purchase ERW - MJ201 | 26d | 2005-10-14 A | 2005-12-14 A | EK000MJ22D, EK000MJ22F, PK000MJ22I, PK000MJ22I FF | 100% | 2005-09-26 | 2005-10-31 |  | 2006-07-29 | 0 | 0 | 00 | EK | MJ2 | 000 | MJ | MJ201 | CE | M | X | F | E | 25 | 06 |  |  |
| EK000MJ35E | Prepare & Issue Purchase ERW - MJ305 | 11d | 2005-10-14 A | 2005-10-26 A | EK000MJ35D, EK000MJ35F, PK000MJ35I, PK000MJ35J FF+3d, PK000MJ35J SS | 100% | 2005-10-20 | 2005-11-04 |  | 2006-07-29 | 0 | 0 | 00 | EK | MJ3 | 000 | MJ | MJ305 | CE | M | X | F | E |  |  |  |  |
| EK000MJ36E | Prepare & Issue Purchase ERW - MJ306 | 11d | 2005-10-14 A | 2005-10-25 A | EK000MJ36F, PK000MJ36I, PK000MJ36J FF+3d, EK000EV010 | 100% | 2005-10-20 | 2005-11-04 |  | 2006-07-29 | 0 | 0 | 00 | EK | MJ3 | 000 | MJ | MJ306 | PE | M | X | F | E |  |  |  |  |
| EK000ML33E | Prepare & Issue Purchase ERW - ML330 | 10d | 2005-10-17 A | 2005-10-26 A | EK000ML33D, PK000ML33I FF, PK000ML33J | 100% | 2005-10-17 | 2005-10-28 |  | 2006-07-29 | 0 | 0 | 00 | EK | ML3 | 000 | MJ | ML330 | NE | M | X | F | E |  |  |  |  |
| PK000MU41N | Recv. Planning V. Data MU410 | 20d | 2005-10-17 A | 2005-10-27 A | PK000MU41P | 100% | 2005-10-17 | 2005-11-11 |  | 2006-07-29 | 0 | 0 | 00 | EK | MU4 | 000 | MJ | MU410 | P15 | M | X | J | E | 20 | 05 |  |  |
| EK000MJ32E | Prepare & Issue Purchase ERW - MJ302 | 11d | 2005-10-20 A | 2005-12-14 A | EK000MJ32D, EK000MJ32F, PK000MJ32I FF, PK000MJ32J SS | 100% | 2005-10-20 | 2005-11-04 |  | 2006-07-29 | 0 | 0 | 00 | EK | MJ3 | 000 | MJ | MJ302 | FE | M | X | F | E |  |  |  |  |
| PK000ML33N | Recv. Planning V. Data ML330 | 20d | 2005-10-21 A | 2005-10-28 A | PK000ML33J | 100% | 2005-10-20 | 2005-11-16 |  | 2006-07-29 | 0 | 0 | 00 | EK | ML3 | 000 | MJ | ML330 | P15 | M |  | J | E | 20 | 15 |  |  |
| PK000ML43N | Recv. Planning V. Data ML430 | 20d | 2005-10-21 A | 2005-12-02 A | PK000ML43J SS | 100% | 2005-11-04 | 2005-12-01 |  | 2006-07-29 | 0 | 0 | 00 | EK | ML4 | 000 | MJ | ML430 | P15 | M |  | J | E | 20 | 15 |  |  |
| EK000MJ34E | Prepare & Issue Final Data Shts - MJ304 | 16d | 2005-10-21 A | 2005-12-09 A | EK000MJ34D, PK000MJ34I, PK000MJ34J SS | 100% | 2005-10-21 | 2005-11-11 |  | 2006-07-29 | 0 | 0 | 00 | EK | MJ3 | 000 | MJ | MJ304 | FE | M | X | F | E |  |  |  |  |
| EK000MU33E | Prepare & Issue Purchase ERW - MU330 | 20d | 2005-10-21 A | 2005-10-27 A | EK000MU33D, PK000MU33I, PK000MU33J, EK000EV015 | 100% | 2005-10-21 | 2005-11-18 |  | 2006-07-29 | 0 | 0 | 00 | EK | MU3 | 000 | MJ | MU330 | FE | M | X | F | E |  |  |  |  |
| EK000MU31D | Technical Evaluation - MU310 | 5d | 2005-10-25 A | 2005-10-31 A | PK000MU31H | 100% | 2005-12-05 | 2005-12-09 |  | 2006-07-29 | 0 | 0 | 00 | EK | MU3 | 000 | MJ | MU310 | NE | M | X | D | E |  |  |  |  |
| EK000MU30E | Prepare & Issue Purchase ERW - MU300 | 20d | 2005-10-31 A | 2005-11-14 A | EK000MU30D FF+5d, PK000MU30I FF+5d, PK000MU30J FF | 100% | 2005-10-31 | 2005-11-25 |  | 2006-07-29 | 0 | 0 | 00 | EK | MU3 | 000 | MJ | MU300 | FE | M | X | F | E | 20 | 09 |  |  |
| EK000MJ37E | Prepare & Issue Purchase ERW - MJ340 | 10d | 2005-11-01 A | 2005-11-16 A | EK000MJ37D, PK000MJ37I FF, PK000MJ37J | 100% | 2005-11-25 | 2005-12-08 |  | 2006-07-29 | 0 | 0 | 00 | EK | MJ3 | 000 | MJ | MJ340 | NE | M | X | F | E |  |  |  |  |
| EK000ML42E | Prepare & Issue Purchase ERW - ML420 | 11d | 2005-11-01 A | 2005-11-10 A | EK000ML42D, EK000ML42F, PK000ML42I FF | 100% | 2005-11-21 | 2005-12-05 |  | 2006-07-29 | 0 | 0 | 00 | EK | ML4 | 000 | MJ | ML420 | NE | M | X | F | E |  |  |  |  |
| EK000MU31E | Prepare & Issue Purchase ERW - MU310 | 3d | 2005-11-04 A | 2005-11-08 A | EK000MU31D | 100% | 2006-01-03 | 2006-01-05 |  | 2006-07-29 | 0 | 0 | 00 | EK | MU3 | 000 | MJ | MU310 | NE | M | X | F | E |  |  |  |  |
| EK000MJ31E | Prepare & Issue Purchase ERW - MJ301 | 11d | 2005-11-07 A | 2005-12-14 A | EK000MJ31F, PK000MJ31J SS | 100% | 2005-11-07 | 2005-11-21 |  | 2006-07-29 | 0 | 0 | 00 | EK | MJ3 | 000 | MJ | MJ301 | FE | M | X | F | E |  |  |  |  |
| EK000ML31E | Prepare & Issue Purchase ERW - ML313 | 10d | 2005-11-08 A | 2006-02-09 A | EK000ML31D, EK000ML31F, PK000ML31I FF, PK000ML31J | 100% | 2005-11-17 | 2005-11-30 |  | 2006-07-29 | 0 | 0 | 00 | EK | ML3 | 000 | MJ | ML313 | FE | ML | X | F | E |  |  |  |  |
| PK000MJ33N | Recv. Planning V. Data MJ303 | 20d | 2005-11-08 A | 2006-01-26 A | PK000MJ33J FF | 100% | 2005-11-10 | 2005-12-07 |  | 2006-07-29 | 0 | 0 | 00 | EK | MJ3 | 000 | MJ | MJ303 | P15 | M |  | J | E | 20 | 10 |  |  |
| PK000MU33N | 03E MU330 2001-U - Piping Conceptual V. Data | 20d | 2005-11-30 A | 2006-03-05 A | PK000MU33J | 100% | 2005-10-31 | 2005-11-25 |  | 2006-07-29 | 0 | 0 | 00 | EK | MU3 | 03E | MJ | MU330 | P15 | M |  | J | E |  |  | 2001U |  |
| EK000ML43E | Prepare & Issue Purchase ERW - ML430 | 10d | 2005-12-02 A | 2005-12-08 A | EK000ML43D, PK000ML43I FF | 100% | 2005-12-05 | 2005-12-16 |  | 2006-07-29 | 0 | 0 | 00 | EK | ML4 | 000 | MJ | ML430 | NE | M | X | F | E |  |  |  |  |
| EK000MU21E | Prepare & Issue Purchase ERW - MU221 | 3d | 2005-12-05 A | 2005-12-22 A | EK000MU21D, PK000MU21I FF, PK000MU21J | 100% | 2005-12-05 | 2005-12-07 |  | 2006-07-29 | 0 | 0 | 00 | EK | MU2 | 000 | MJ | MU221 | NE | M | X | F | E |  |  |  |  |
| EK000MU22E | Prepare & Issue Purchase ERW - MU222 | 3d | 2005-12-05 A | 2005-12-22 A | PK000MU22I FF, PK000MU22J | 100% | 2005-12-05 | 2005-12-07 |  | 2006-07-29 | 0 | 0 | 00 | EK | MU2 | 000 | MJ | MU222 | NE | M | X | F | E |  |  |  |  |
| EK000MU29F | Develop & Issue Inquiry for ERW - MU292 | 10d | 2005-12-05 A | 2005-12-23 A | EK000MU29B FS+2d, EK000MJ005 | 100% | 2005-12-05 | 2005-12-16 |  | 2006-07-29 | 0 | 0 | 00 | EK | MU2 | 000 | MJ | MU292 | NE | M | X | A | E |  |  |  |  |
| EK000MJ37S | Develop & Issue Design Data for ERW - MJ307 | 5d | 2005-12-12 A | 2005-12-16 A | EK000MJ32B SS+5d, EK000MJ37R | 100% | 2006-01-23 | 2006-01-27 |  | 2006-07-29 | 0 | 0 | 00 | EK | MJ3 | 05A | MJ | MJ307 | CE | M | X |  | E |  |  |  |  |
| EK000MJ38S | Develop & Issue Design Data for ERW - MJ308 | 5d | 2005-12-12 A | 2005-12-16 A | EK000MJ32B SS+5d, EK000MJ38R | 100% | 2006-01-23 | 2006-01-27 |  | 2006-07-29 | 0 | 0 | 00 | EK | MJ3 | 05A | MJ | MJ308 | CE | M | X |  | E |  |  |  |  |
| EK000MJ37T | Update/Issue Formal Inquiry for ERW - MJ307 | 11d | 2005-12-19 A | 2005-12-27 A | EK000MJ37S, EK000MJ005 SS | 100% | 2006-01-17 | 2006-01-31 |  | 2006-07-29 | 0 | 0 | 00 | EK | MJ3 | 05A | MJ | MJ307 | CE | M | X | A | E |  |  |  |  |
| EK000MJ73E | Prepare & Issue Purchase ERW - MJ730 | 8d | 2005-12-19 A | 2006-01-05 A | EK000MJ73F, PK000MJ73I, PK000MJ73I FF, PK000MJ73J | 100% | 2005-12-19 | 2005-12-29 |  | 2006-07-29 | 0 | 0 | 00 | EK | MJ7 | 000 | MJ | MJ730 | PE | M | X | F | E |  |  |  |  |
| PK000MU30N | Recv. Planning V. Data MU300 - EDR Unit | 35d | 2005-12-20 A | 2006-02-10 A | PK000MU30J | 100% | 2006-01-03 | 2006-02-20 |  | 2006-07-29 | 0 | 0 | 00 | EK | MU3 | 000 | MJ | MU300 | P15 | M | X | J | E | 20 | 09 |  |  |
| EK000ML50Z | Technical Evaluation - ML500 | 15d | 2006-01-10 A | 2006-01-30 A | PK000ML50Y, EK000ML50F S1 | 100% | 2006-01-16 | 2006-02-03 |  | 2006-07-29 | 0 | 0 | 00 | EK | ML5 | 000 | MJ | ML500 | FE | M | X | D | E |  |  |  |  |
| EK000MJ33E | Prepare & Issue Purchase ERW - MJ303 | 11d | 2006-01-19 A | 2006-01-27 A | EK000MJ33D, PK000MJ33I FF | 100% | 2006-01-23 | 2006-02-06 |  | 2006-07-29 | 0 | 0 | 00 | EK | MJ3 | 000 | MJ | MJ303 | FE | M | X | F | E |  |  |  |  |
| EK000MU32D | 01D MU322 Technical Evaluation | 5d | 2006-01-23 A | 2006-03-03 A | PK000MU32H | 100% | 2006-02-23 | 2006-03-01 | EBWK - Global | 2006-07-29 | 0 | 0 | 00 | EK | MU3 | 000 | MJ | MU322 | NE | MU |  | D | E |  |  |  | 03 |
| EK000MU11D | 05B MU311 Technical Evaluation | 5d | 2006-02-03 A | 2006-03-03 A | PK000MU11H | 100% | 2006-02-23 | 2006-03-01 | EBWK - Global | 2006-07-29 | 0 | 0 | 00 | EK | MU3 | 000 | MU | MU311 | NE | MU |  | D | E |  |  |  | 03 |
| EK000MJ37C | Prepare & Issue Purchase ERW - MJ307 | 11d | 2006-02-17 A | 2006-02-20 A | PK000MJ37E, EK000MJ37T, PK000MJ37B, PK000MJ37M FF+3d | 100% | 2006-02-01 | 2006-02-15 |  | 2006-07-29 | 0 | 0 | 00 | EK | MJ3 | 000 | MJ | MJ307 | CE | M | X | F | E |  |  |  |  |

Notes:
- EK000MJ37S: P3 Activity Log Info: ISBL Pumps
- EK000MJ38S: P3 Activity Log Info: ISBL Pumps

| ID | WBS | Activity | Type | Duration | Start | Finish | Predecessors | Complete | Planned start | Planned finish | Calendar | zData Date | Optimistic Duration | Most Likely Duration | Pessimistic Duration | PCA Criticality Index | PCA Duration Sensitivity | EB02 - UNIT | EB01 - RESP | EB06 - WORK OP | EB03 - AREA | EB05 - DISCIPLINE | EB07 - REQN | EB10 - KEY | EB04 - CLASS | EB11 - FLAG | EB09 - IPMS | EB00 - EPC | EB21 - Rev 2 Risk Associations | user_integer2 | EB14 - RISK | user_integer1 | user_text1 |
| --- | --- | --- | --- | --- | --- | --- | --- | --- | --- | --- | --- | --- | --- | --- | --- | --- | --- | --- | --- | --- | --- | --- | --- | --- | --- | --- | --- | --- | --- | --- | --- | --- | --- |
| EK000MU29D |  | Technical Evaluation - MU292 |  | 5d | 2006-02-20 A | 2006-04-03 A | PK000MU29H | 100% | 2006-03-06 | 2006-03-10 |  | 2006-07-29 | 9 | 9 | 15 | 0 | 0 | 00 | EK | MU2 | 000 | MJ | MU292 | NE | MU | X | D | E | 03 |  |  |  |  |
| EK000MU25D |  | 02G MU225 Technical Evaluation |  | 5d | 2006-02-28 A | 2006-03-24 A | PK000MU25H | 100% | 2006-03-01 | 2006-03-07 | EBWK - Global | 2006-07-29 | 9 | 9 | 15 | 9.3 | 0 | 00 | EK | MU2 | 000 | MJ | MU225 | NE | MU |  | D | E | 03 |  |  |  |  |
| PK000ML50N |  | Recv. Planning V. Data ML500 |  | 20d | 2006-03-01 A | 2006-03-27 A | PK000ML50J, EK000EB015, EK000ML50Z, EK000YA000 FS+5d, PK000ML52J, EK000ML50F | 100% | 2006-03-27 | 2006-04-21 |  | 2006-07-29 | 18 | 20 | 22 | 0 | 2.2 | 00 | EK | ML5 | 000 | MJ | ML500 | P15 | ML | Y | J | E | 06 | 20 | 15 |  |  |
| EK000MU11E |  | 05B MU311 Prepare & Issue Purchase ERW |  | 3d | 2006-03-13 A | 2006-03-15 A | PK000MU11J, EK000MU11D, PK000MU11I | 100% |  |  | EBWK - Global | 2006-07-29 |  |  |  | 0 | 0 | 00 | EK | MU3 | 000 | MJ | MU311 | NE | MU |  | F | E | 03 |  |  |  |  |
| PK000MU11N |  | 05B MU311 Recv. Planning V. Data |  | 20d | 2006-03-16 A | 2006-03-31 A | PK000MU11J | 100% | 2006-03-13 | 2006-04-07 | EBWK - Global | 2006-07-29 | 18 | 20 | 22 | 0 | 3.2 | 00 | EK | MU3 | 000 | MU | MU311 | P15 | MU |  | J | E | 06 |  |  |  |  |
| EK000MJ38T |  | Update/Issue Formal Inquiry for ERW - MJ308 |  | 11d | 2006-03-27 A | 2006-04-03 A | EK000MJ38S, EK000MJ005 | 100% | 2006-03-27 | 2006-04-10 |  | 2006-07-29 |  |  |  | 0 | 0 | 00 | EK | MJ3 | 000 | MJ | MJ308 | CE | M | X | A | E | 03 |  |  |  |  |
| EK000ML50E |  | Prepare & Issue Purchase ERW - ML500 |  | 10d | 2006-03-27 A | 2006-04-07 A | EK000ML50D, PK000ML50I FF, PK000ML50J, PK000ML52I FF, EK000EB015, EK000ML50Z, EK000YA000 FS+5d, PK000ML52J, EK000ML50F S1 | 100% |  |  |  | 2006-07-29 | 10 | 10 | 15 | 0 | 2.5 | 00 | EK | ML5 | 000 | MJ | ML500 | FE | ML | X | F | E | 03 |  |  |  |  |
| EK000MJ39E |  | Prepare & Issue Purchase ERW - MJ391 |  | 10d | 2006-03-29 A | 2006-05-10 A | EK000MJ39F, PK000MJ39I SS+20d, PK000MJ39J FF | 100% | 2006-03-29 | 2006-04-11 |  | 2006-07-29 | 8 | 10 | 12 | 0 | 5.5 | 00 | EK | MJ3 | 000 | MJ | MJ391 | PE | MJ | CD | F | E | 03 |  |  | 5 |  |
| PK000MU29N |  | Recv. Planning V. Data MU292 |  | 20d | 2006-04-19 A | 2006-05-10 A | PK000MU29J | 100% | 2006-04-17 | 2006-05-12 |  | 2006-07-29 | 18 | 20 | 25 | 0 | 2.7 | 00 | EK | MU2 | 000 | MJ | MU292 | P15 | MU |  | J | E | 06 |  |  |  |  |
| EK000MU29E |  | Prepare & Issue Purchase ERW - MU292 |  | 3d | 2006-04-24 A | 2006-04-27 A | EK000MU29D, EK000MU29F, PK000MU29I FF, PK000MU29J | 100% | 2006-05-09 | 2006-05-11 |  | 2006-07-29 | 8 | 10 | 12 | 0 | 0 | 00 | EK | MU2 | 000 | MJ | MU292 | NE | MU | CD | F | E | 03 |  |  | 3 |  |
| EK000MU32E |  | 01D MU322 Prepare & Issue Purchase ERW |  | 3d | 2006-05-01 A | 2006-05-01 A | EK000MU32D, PK000MU32I, PK000MU32J | 100% | 2006-05-09 | 2006-05-11 | EBWK - Global | 2006-07-29 | 10 | 12 | 15 | 0 | 6.4 | 00 | EK | MU3 | 000 | MJ | MU322 | NE | MU | CD | F | E | 03 |  |  | 3 |  |
| EK000MU25E |  | 02G MU225 Prepare & Issue Purchase ERW |  | 3d | 2006-05-01 A | 2006-06-13 A | EK000MU25D, PK000MU25I, PK000MU25J FF | 100% | 2006-05-01 | 2006-05-03 | EBWK - Global | 2006-07-29 | 8 | 10 | 12 | 0 | 0 | 00 | EK | MU2 | 000 | MJ | MU225 | NE | MU | CD | F | E | 03 |  |  | 3 |  |
| EK000MJ38C |  | Prepare & Issue Purchase ERW - MJ308 |  | 11d | 2006-05-24 A | 2006-06-13 A | PK000MJ38E, EK000MJ38T, PK000MJ38B, PK000MJ38M FF+3d | 100% | 2006-05-22 | 2006-06-05 |  | 2006-07-29 | 8 | 10 | 12 | 0 | 0.5 | 00 | EK | MJ3 | 000 | MJ | MJ308 | CE | M | X | F | E | 03 |  |  |  |  |
|  | PI | **Piping Engineering** |  |  | 2005-02-28 | 2007-01-26 |  |  |  |  |  |  |  |  |  |  |  |  |  |  |  |  |  |  |  |  |  |  |  |  |  |  |  |
| EK000PI080 |  | Develop Split of work |  | 15d | 2005-02-28 A | 2005-03-25 A | EK000YA002 SS | 100% | 2005-02-28 | 2005-03-18 |  | 2006-07-29 |  |  |  | 0 | 0 | 00 | EK | G10 | 000 | PI |  | P20 | P | X |  | E |  |  |  |  |  |
| EK000PI115 |  | Develop Piping Class Index (IOPMC) |  | 11d | 2005-03-07 A | 2005-04-12 A | EK000PI120 SS | 100% | 2005-03-07 | 2005-03-21 |  | 2006-07-29 |  |  |  | 0 | 0 | 00 | EK | P30 | 000 | PI |  | P20 | P | X |  | E |  |  |  |  |  |
| EK000PI120 |  | Identify priority pipe classes |  | 11d | 2005-03-07 A | 2005-03-22 A | EK000YA002 SS+10d | 100% | 2005-03-07 | 2005-03-21 |  | 2006-07-29 |  |  |  | 0 | 0 | 00 | EK | P30 | 000 | PI |  | P20 | P | X |  | E |  |  |  |  |  |
| EK000PI132 |  | Develop Early Tech P-Class specs for Procurement |  | 40d | 2005-03-07 A | 2005-04-22 A | EK000PI120 SS | 100% | 2005-03-07 | 2005-04-29 |  | 2006-07-29 |  |  |  | 0 | 0 | 00 | EK | P30 | 000 | PI |  | P20 | P | X |  | E |  |  |  |  |  |
| EK000PI040 |  | Prepare technology work plan - Piping Engr. |  | 15d | 2005-03-14 A | 2005-04-08 A | EK000PE090 FF+5d, EK000PI080 FF | 100% | 2005-03-14 | 2005-04-01 |  | 2006-07-29 |  |  |  | 0 | 0 | 00 | EK | G10 | 000 | PI |  | P20 | P | X |  | E |  |  |  |  |  |
| EK000PI051 |  | Prepare P/Mech Support Details |  | 20d | 2005-03-14 A | 2005-04-14 A | EK000YA002 SS+15d | 100% | 2005-03-14 | 2005-04-08 |  | 2006-07-29 |  |  |  | 0 | 0 | 00 | EK | P60 | 000 | PI |  | P20 | P | X |  | E |  |  |  |  |  |
| EK000PI060 |  | Prepare Other Project Documentation |  | 15d | 2005-03-14 A | 2005-04-08 A | EK000PI040 SS | 100% | 2005-03-14 | 2005-04-01 |  | 2006-07-29 |  |  |  | 0 | 0 | 00 | EK | G10 | 000 | PI |  | P20 | P | X |  | E |  |  |  |  |  |
| EK000PI110 |  | Locate FMCL Documents |  | 8d | 2005-03-16 A | 2005-03-25 A | EK000YA002 SS+16d | 100% |  |  |  | 2006-07-29 |  |  |  | 0 | 0 | 00 | EK | G10 | 000 | PI |  | P20 | P | X |  | E |  |  |  |  |  |
| EK000PI020 |  | Develop Piping Specs (Paper) |  | 65d | 2005-03-21 A | 2005-06-27 A | EK000PI115 FF, EK000PI120 FF+30d, EK000YA002 SS+10d | 100% | 2005-03-21 | 2005-06-20 |  | 2006-07-29 |  |  |  | 0 | 0 | 00 | EK | P30 | 000 | PI |  | P20 | P | X |  | E |  |  |  |  |  |
| EK000PI160 |  | P&ID Area Break Mark-up |  | 10d | 2005-03-21 A | 2005-04-07 A | EK000SY010 | 100% | 2005-03-21 | 2005-04-01 |  | 2006-07-29 |  |  |  | 0 | 0 | 00 | EK | G10 | 000 | PI |  | P20 | P | X |  | E |  |  |  |  |  |
| EK000PI005 |  | Locate Permanent Tie in pnts Gas, Wtr, Storm wtr |  | 15d | 2005-03-28 A | 2005-04-15 A | EK000CK100 SS | 100% |  |  |  | 2006-07-29 |  |  |  | 0 | 0 | 00 | EK | P80 | 000 | PI |  | P20 | P | X |  | E |  |  |  |  |  |
| EK000PI133 |  | Dvlp/Issue V-class specs & Standads for Procurmt |  | 25d | 2005-03-28 A | 2005-05-10 A | EK000PI020 SS+5d | 100% | 2005-03-28 | 2005-04-29 |  | 2006-07-29 |  |  |  | 0 | 0 | 00 | EK | P30 | 000 | PI |  | P20 | P | X |  | E |  |  |  |  |  |
| EK000PI125 |  | Validate new plot layout (impacts on pipe stress |  | 50d | 2005-04-01 A | 2005-06-20 A | EK020PI010 | 100% | 2005-04-01 | 2005-06-10 |  | 2006-07-29 |  |  |  | 0 | 0 | 00 | EK | P60 | 000 | PI |  | P20 | P | X |  | E |  |  |  |  |  |
| EK000PI055 |  | Prepare Object Engineering Work Instruction |  | 5d | 2005-04-08 A | 2005-04-15 A | EK000IM010 | 100% | 2005-04-25 | 2005-04-29 |  | 2006-07-29 |  |  |  | 0 | 0 | 00 | EK | G10 | 000 | PI |  | P20 | P | X |  | E |  |  |  |  |  |
| EK000PI085 |  | Estimate/Schedule Review |  | 5d | 2005-04-08 A | 2005-04-14 A | EK000PC010 FF | 100% |  |  |  | 2006-07-29 |  |  |  | 0 | 0 | 00 | EK | G10 | 000 | PI |  | P20 | P | X |  | E |  |  |  |  |  |
| EK000PI100 |  | Critical Line List |  | 15d | 2005-04-11 A | 2005-05-06 A | EK000PR020, EK000PI125 SS | 100% | 2005-04-11 | 2005-04-29 |  | 2006-07-29 |  |  |  | 0 | 0 | 00 | EK | P20 | 000 | PI |  | P20 | P | X |  | E |  |  |  |  |  |
| EK000PI105 |  | Performance Test of Citrix for PDS w/MEC |  | 2d | 2005-04-11 A | 2005-04-11 A | EK000IM040 FS+10d | 100% | 2005-04-11 | 2005-04-12 |  | 2006-07-29 |  |  |  | 0 | 0 | 00 | EK | G10 | 000 | PI |  | P20 | P | X |  | E |  |  |  |  |  |
| EK000PI131 |  | Devlop Balance Tech P-Class specs for Procuremnt |  | 39d | 2005-05-06 A | 2005-06-24 A | EK000PI132, EK000PI100 | 100% | 2005-05-06 | 2005-06-30 |  | 2006-07-29 |  |  |  | 0 | 0 | 00 | EK | P30 | 000 | PI |  | P20 | P | X |  | E |  |  |  |  |  |
| PK000PIA1C |  | Bulk Piping A/G & U/G - Tech Evaluation |  | 10d | 2005-06-06 A | 2005-07-22 A | PK000PIA1B | 100% | 2005-06-06 | 2005-06-17 |  | 2006-07-29 |  |  |  | 0 | 0 | 00 | PK | U20 | 000 | PI | PIA11 |  | P | X | D | E |  |  |  |  |  |
| PK000PIA4C |  | Product Line Piping - Tech Evaluation |  | 10d | 2005-07-08 A | 2005-08-03 A | PK000PIA4B | 100% | 2005-07-15 | 2005-07-28 |  | 2006-07-29 |  |  |  | 0 | 0 | 00 | PK | U20 | 000 | PI | PIA41 |  | P | X | D | E |  |  |  |  |  |
| PK000PTA0F |  | Engineered Pipe Supports - Planning V. Data |  | 20d | 2005-09-14 A | 2006-02-24 A | PK000PTA0D | 100% | 2006-06-28 | 2006-07-25 |  | 2006-07-29 |  |  |  | 0 | 0 | 00 | EK | P60 | 000 | PI | PTA02 | P15 | P |  | J | E | 06 |  |  |  |  |
| PK000PTA0H |  | Engineered Pipe Supports - Production V. Data |  | 30d | 2006-02-24 A | 2006-03-01 A | PK000PTA0F | 100% | 2006-03-27 | 2006-05-05 |  | 2006-07-29 |  |  |  | 0 | 0 | 00 | EK | P60 | 000 | PI | PTA02 | P16 | P |  | M | E |  |  |  |  |  |
| EK000PI200 |  | Final Delta Piping Bulk Quanities for Purchase | milestone | 0d | 2007-01-26 A | 2007-01-26 A | EK03EPI144, EM05API135, EM01CPI138 FF | 100% |  |  |  | 2006-07-29 |  |  |  | 0 | 0 | 00 | EK | G10 | 000 | PI | PIA11 |  | P | X |  | E |  |  |  |  | (Except 5A&B Changes) |

Notes:
- EK000PI115: P3 Activity Log Info: In Typing / ACTUAL
- EK000PI060: P3 Activity Log Info: Safety Checklist, WOC, WG Roster, Exec Plans
- EK000PI005: P3 Activity Log Info: During Site Visit - Construction
- EK000PI055: P3 Activity Log Info: Add to every discipline after OE Set-up by / IM

| ID | WBS | Activity | Duration | Start | Finish | Predecessors | Complete | Planned start | Planned finish | zData Date | PCA Criticality Index | PCA Duration Sensitivity | EB02 - UNIT | EB01 - RESP | EB06 - WORK OP | EB03 - AREA | EB05 - DISCIPLINE | EB04 - CLASS | EB11 - FLAG | EB00 - EPC | EB07 - REQN | EB08 - TAG | EB10 - KEY | EB14 - RISK |
| --- | --- | --- | --- | --- | --- | --- | --- | --- | --- | --- | --- | --- | --- | --- | --- | --- | --- | --- | --- | --- | --- | --- | --- | --- |
|  | PR | **Process Engineering** |  | 2005-02-21 | 2005-12-27 |  |  |  |  |  |  |  |  |  |  |  |  |  |  |  |  |  |  |  |
| EK000PR010 |  | Process Work Plan | 15d | 2005-02-21 A | 2005-04-22 A | EK000PE090 FF | 100% | 2005-02-21 | 2005-03-11 | 2006-07-29 | 0 | 0 | 00 | EK | R10 | 000 | PR | G | X | E |  |  |  |  |
| EK000PR015 |  | Process Configuration | 15d | 2005-02-21 A | 2005-03-15 A | EK000PR010 SS | 100% | 2005-02-21 | 2005-03-11 | 2006-07-29 | 0 | 0 | 00 | EK | R10 | 000 | PR | Y | X | E |  |  |  |  |
| EK000PR020 |  | Heat & Material Balances (SOR & EOR) | 15d | 2005-02-21 A | 2005-03-25 A | EK000PR010 SS | 100% | 2005-02-21 | 2005-03-11 | 2006-07-29 | 0 | 0 | 00 | EK | R10 | 000 | PR | Y | X | E |  |  |  |  |
| EK000PR025 |  | Pressure Profile | 9d | 2005-02-21 A | 2005-03-03 A | EK000PR010 SS | 100% |  |  | 2006-07-29 | 0 | 0 | 00 | EK | R10 | 000 | PR | Y | X | E |  |  |  |  |
| EK000PR030 |  | Stream Summary | 15d | 2005-02-21 A | 2005-03-15 A | EK000PR010 SS | 100% | 2005-02-21 | 2005-03-11 | 2006-07-29 | 0 | 0 | 00 | EK | R10 | 000 | PR | Y | X | E |  |  |  |  |
| EK000PR035 |  | Process Flow Diagrams PFD's - EOR | 15d | 2005-02-21 A | 2005-03-15 A | EK000PR010 SS | 100% | 2005-02-21 | 2005-03-11 | 2006-07-29 | 0 | 0 | 00 | EK | R10 | 000 | PR | Y | X | E |  |  |  |  |
| EK000PR040 |  | Steam Balance Diagram - EOR | 15d | 2005-02-21 A | 2005-03-15 A | EK000PR010 SS | 100% | 2005-02-21 | 2005-03-11 | 2006-07-29 | 0 | 0 | 00 | EK | R10 | 000 | PR | Y | X | E |  |  |  |  |
| EK000PR045 |  | Cooling Water Balance - EOR | 15d | 2005-02-21 A | 2005-03-17 A | EK000PR010 SS | 100% | 2005-02-21 | 2005-03-11 | 2006-07-29 | 0 | 0 | 00 | EK | R10 | 000 | PR | Y | X | E |  |  |  |  |
| EK000PR050 |  | Electrical Load Summary - Initial | 9d | 2005-02-21 A | 2005-03-03 A | EK000PR010 SS | 100% |  |  | 2006-07-29 | 0 | 0 | 00 | EK | R10 | 000 | PR | Y | X | E |  |  |  |  |
| EK000PR055 |  | Feed & Fuel Summary | 15d | 2005-02-21 A | 2005-04-08 A | EK000PR010 SS | 100% | 2005-02-21 | 2005-03-11 | 2006-07-29 | 0 | 0 | 00 | EK | R10 | 000 | PR | Y | X | E |  |  |  |  |
| EK000MB33A |  | 101-B Develop & Issue Load Sheet | 3d | 2005-03-16 A | 2005-03-18 A | EK000PR020 SS, EK000PR030 | 100% |  |  | 2006-07-29 | 0 | 0 | 00 | EK | R10 | 000 | PR | M | X | E | MB101 | 101B | CE | 04 |
| EK000MD33A |  | Develop & Issue Load Sheets for ERW - MD303 | 3d | 2005-03-16 A | 2005-03-18 A | EK000PR020 SS, EK000PR030 | 100% |  |  | 2006-07-29 | 0 | 0 | 00 | EK | R10 | 000 | PR | M | X | E | MD303 |  | FE |  |
| EK000MJ21A |  | Develop & Issue Load Sheets for ERW - MJ202 | 3d | 2005-03-16 A | 2005-03-23 A | EK000PR020 SS, EK000PR030 | 100% | 2005-03-16 | 2005-03-18 | 2006-07-29 | 0 | 0 | 00 | EK | R10 | 000 | PR | M | X | E | MJ202 |  | CE | 06 |
| EK000MJ22A |  | Develop & Issue Load Sheets for ERW - MJ201 | 3d | 2005-03-16 A | 2005-03-18 A | EK000PR020 SS, EK000PR030 | 100% |  |  | 2006-07-29 | 0 | 0 | 00 | EK | R10 | 000 | PR | M | X | E | MJ201 |  | CE | 06 |
| EK000PR060 |  | Process Load Sheets | 35d | 2005-03-16 A | 2005-04-22 A | EK000PR010 FF, EK000PR015, EK000PR020 FF, EK000PR025, EK000PR030, EK000PR035, EK000PR040, EK000PR045, EK000PR050, EK000PR055 FF | 100% | 2005-03-16 | 2005-05-03 | 2006-07-29 | 0 | 0 | 00 | EK | R10 | 000 | PR | Y | X | E |  |  |  |  |
| EK000MD21A |  | Develop & Issue Load Sheets for ERW - MD201 | 2d | 2005-03-21 A | 2005-03-22 A | EK000MJ22A, EK000PR020 SS, EK000PR030 | 100% |  |  | 2006-07-29 | 0 | 0 | 00 | EK | R10 | 000 | PR | M | X | E | MD201 |  | FE |  |
| EK000MD33P |  | Develop Analytical Sketches for ERW - MD303 | 35d | 2005-03-21 A | 2005-06-03 A | EK000MD33A | 100% | 2005-03-21 | 2005-05-06 | 2006-07-29 | 0 | 0 | 00 | EK | R20 | 000 | PA | M | X | E | MD303 |  | FE |  |
| EK000MD43A |  | Develop & Issue Load Sheets for ERW - MD403 | 2d | 2005-03-21 A | 2005-03-23 A | EK000PR020, EK000PR030 | 100% | 2005-03-21 | 2005-03-22 | 2006-07-29 | 0 | 0 | 00 | EK | R10 | 000 | PR | M | X | E | MD403 |  | CE |  |
| EK000MJ31A |  | Develop & Issue Load Sheets for ERW - MJ301 | 4d | 2005-03-21 A | 2005-03-23 A | EK000MJ22A, EK000PR020 SS, EK000PR030 | 100% | 2005-03-21 | 2005-03-24 | 2006-07-29 | 0 | 0 | 00 | EK | R10 | 000 | PR | M | X | E | MJ301 |  | FE |  |
| EK000PR076 |  | Identify Risk of Equipment Changes | 5d | 2005-03-21 A | 2005-04-08 A | EK000PR060 SS | 100% | 2005-03-21 | 2005-03-25 | 2006-07-29 | 0 | 0 | 00 | EK | R10 | 000 | PR | Y | X | E |  |  |  |  |
| EK000PR115 |  | Issue Prelim Load Sht for Air Cooling Study | 5d | 2005-03-21 A | 2005-03-25 A | EK000PR020 SS, EK000PR030 | 100% |  |  | 2006-07-29 | 0 | 0 | 00 | EK | R10 | 000 | PR | M | X | E |  |  |  |  |
| EK000MD44A |  | Develop & Issue Load Sheets for ERW - MD404 | 2d | 2005-03-22 A | 2005-04-19 A | EK000PR020, EK000PR030 | 100% | 2005-03-22 | 2005-03-23 | 2006-07-29 | 0 | 0 | 00 | EK | R10 | 000 | PR | M | X | E | MD404 |  | NE |  |
| EK000MD34A |  | Develop & Issue Load Sheets for ERW - MD304 | 4d | 2005-03-23 A | 2005-03-28 A | EK000MD21A, EK000PR020 SS, EK000PR030 | 100% |  |  | 2006-07-29 | 0 | 0 | 00 | EK | R10 | 000 | PR | M | X | E | MD304 |  | CE |  |
| EK000MD21P |  | Develop Prelim Analytical Sktch for ERW - MD201 | 6d | 2005-03-24 A | 2005-04-21 A | EK000MD21A FS+1d | 100% | 2005-03-24 | 2005-03-31 | 2006-07-29 | 0 | 0 | 00 | EK | R20 | 000 | PA | M | X | E | MD201 |  | FE |  |
| EK000MD21Q |  | Develop Final Analytical Sktch for ERW - MD201 | 27d | 2005-03-24 A | 2005-05-26 A | EK000MD21A FS+1d | 100% | 2005-03-24 | 2005-04-29 | 2006-07-29 | 0 | 0 | 00 | EK | R20 | 000 | PA | M | X | E | MD201 |  | FE |  |
| EK000MC32A |  | Develop & Issue Load Sheets for ERW - MC311 | 3d | 2005-03-25 A | 2005-03-30 A | EK000MC31A, EK000PR020, EK000PR030 | 100% | 2005-03-25 | 2005-03-29 | 2006-07-29 | 0 | 0 | 00 | EK | R10 | 000 | PR | M | X | E | MC311 |  | PE |  |
| EK000MD31A |  | Develop & Issue Load Sheets for ERW - MD301 | 2d | 2005-03-28 A | 2005-03-29 A | EK000MD34A, EK000PR020, EK000PR030 | 100% |  |  | 2006-07-29 | 0 | 0 | 00 | EK | R10 | 000 | PR | M | X | E | MD301 |  | CE |  |
| EK000MD32A |  | Develop & Issue Load Sheets for ERW - MD302 | 2d | 2005-03-28 A | 2005-03-29 A | EK000MD31A, EK000PR020, EK000PR030 | 100% |  |  | 2006-07-29 | 0 | 0 | 00 | EK | R10 | 000 | PR | M | X | E | MD302 |  | CE |  |
| EK000MD41A |  | Develop & Issue Load Sheets for ERW - MD401 | 2d | 2005-03-28 A | 2005-03-29 A | EK000MD43A, EK000PR020, EK000PR030 | 100% |  |  | 2006-07-29 | 0 | 0 | 00 | EK | R10 | 000 | PR | M | X | E | MD401 |  | CE |  |
| EK000MF31A |  | Develop & Issue Load Sheets for ERW - MF301 | 2d | 2005-03-28 A | 2005-03-28 A | EK000MD51A, EK000PR020, EK000PR030 | 100% | 2005-03-28 | 2005-03-29 | 2006-07-29 | 0 | 0 | 00 | EK | R10 | 000 | PR | M | X | E | MF301 |  |  |  |
| EK000PR095 |  | Steam Balance - Startup, 103-J, Etc | 20d | 2005-03-28 A | 2005-04-01 A | EK000MD32A, EK000PR020, EK000PR055 FF | 100% | 2005-03-28 | 2005-04-22 | 2006-07-29 | 0 | 0 | 00 | EK | R10 | 000 | PR | Y | X | E |  | 103JTC |  |  |
| EK000MC31A |  | Develop & Issue Load Sheets for ERW - MC310 | 3d | 2005-03-29 A | 2005-03-31 A | EK000MD34A, EK000PR020, EK000PR030 | 100% |  |  | 2006-07-29 | 0 | 0 | 00 | EK | R10 | 000 | PR | M | X | E | MC310 |  | PE |  |
| EK000MD42A |  | Develop & Issue Load Sheets for ERW - MD402 | 3d | 2005-03-30 A | 2005-03-31 A | EK000MD32A, EK000PR020, EK000PR030 | 100% | 2005-03-30 | 2005-04-01 | 2006-07-29 | 0 | 0 | 00 | EK | R10 | 000 | PR | M | X | E | MD402 |  | CE |  |
| EK000MD51A |  | Develop & Issue Load Sheets for ERW - MD501 | 2d | 2005-03-30 A | 2005-04-04 A | EK000MD41A, EK000PR020, EK000PR030 | 100% | 2005-03-30 | 2005-03-31 | 2006-07-29 | 0 | 0 | 00 | EK | R10 | 000 | PR | M | X | E | MD501 |  | CE |  |
| EK000MJ35A |  | Develop & Issue Load Sheets for ERW - MJ305 | 5d | 2005-03-30 A | 2005-04-22 A | EK000PR020, EK000PR030 | 100% | 2005-03-30 | 2005-04-05 | 2006-07-29 | 0 | 0 | 00 | EK | R10 | 000 | PR | M | X | E | MJ305 |  | CE |  |
| EK000MC21A |  | Develop & Issue Load Sheets for ERW - MC210 | 3d | 2005-04-04 A | 2005-04-07 A | EK000MC32A, EK000PR020, EK000PR030 | 100% | 2005-04-04 | 2005-04-06 | 2006-07-29 | 0 | 0 | 00 | EK | R10 | 000 | PR | M | X | E | MC210 |  | PE |  |
| EK000MC23A |  | Develop & Issue Load Sheets for ERW - MC230 | 3d | 2005-04-04 A | 2005-04-22 A | EK000MC21A, EK000PR020, EK000PR030 | 100% | 2005-04-04 | 2005-04-06 | 2006-07-29 | 0 | 0 | 00 | EK | R10 | 000 | PR | M | X | E | MC230 |  | PE |  |
| EK000MJ75A |  | Develop & Issue Load Sheets for ERW - MJ750 | 3d | 2005-04-04 A | 2005-04-04 A | EK000PR020, EK000PR030, EK000PR095 | 100% | 2005-04-04 | 2005-04-06 | 2006-07-29 | 0 | 0 | 00 | EK | R10 | 000 | PR | M | X | E | MJ750 |  | PE |  |
| EK000ML31A |  | Develop & Issue Load Sheets for ERW - ML313 | 3d | 2005-04-04 A | 2005-04-04 A | EK000PR020, EK000PR030 | 100% | 2005-04-04 | 2005-04-06 | 2006-07-29 | 0 | 0 | 00 | EK | R10 | 000 | PR | M | X | E | ML313 |  | FE |  |
| EK000MD22A |  | Develop & Issue Load Sheets for ERW - MD202 | 2d | 2005-04-05 A | 2005-04-05 A | EK000MD51A, EK000PR020, EK000PR030 | 100% | 2005-04-05 | 2005-04-06 | 2006-07-29 | 0 | 0 | 00 | EK | R10 | 000 | PR | M | X | E | MD202 |  | FE |  |
| EK000MD42P |  | Confirm Analytical Design for ERW - MD402 | 10d | 2005-04-05 A | 2005-04-20 A | EK000MD42A | 100% | 2005-04-05 | 2005-04-18 | 2006-07-29 | 0 | 0 | 00 | EK | R20 | 000 | PA | M | X | E | MD402 |  | CE |  |
| EK000MJ37A |  | Develop & Issue Load Sheets for ERW - MJ340 | 2d | 2005-04-05 A | 2005-04-08 A | EK000MJ35A SS, EK000PR020, EK000PR030 | 100% | 2005-04-05 | 2005-04-06 | 2006-07-29 | 0 | 0 | 00 | EK | R10 | 000 | PR | M | X | E | MJ340 |  | NE |  |
| EK000MC61A |  | Develop & Issue Load Sheets for ERW - MC610 | 3d | 2005-04-08 A | 2005-04-19 A | EK000MC23A, EK000PR020, EK000PR030 | 100% | 2005-04-08 | 2005-04-12 | 2006-07-29 | 0 | 0 | 00 | EK | R10 | 000 | PR | M | X | E | MC610 |  | PE |  |
| EK000MD34R |  | Develop Final Analytical Sktch for ERW - MD304 | 10d | 2005-04-08 A | 2005-04-15 A | EK000MD34A | 100% | 2005-04-08 | 2005-04-21 | 2006-07-29 | 0 | 0 | 00 | EK | R20 | 000 | PA | M | X | E | MD304 |  | CE |  |
| EK000MD43P |  | Confirm Analytical Design for ERW - MD403 | 10d | 2005-04-08 A | 2005-04-15 A | EK000MD43A | 100% | 2005-04-08 | 2005-04-21 | 2006-07-29 | 0 | 0 | 00 | EK | R20 | 000 | PA | M | X | E | MD403 |  | CE |  |
| EK000MD31P |  | Confirm Analytical Design for ERW - MD301 | 10d | 2005-04-11 A | 2005-04-29 A | EK000MD31A | 100% | 2005-04-11 | 2005-04-22 | 2006-07-29 | 0 | 0 | 00 | EK | R20 | 000 | PA | M | X | E | MD301 |  | CE |  |
| EK000MD32P |  | Confirm Analytical Design for ERW - MD302 | 10d | 2005-04-11 A | 2005-05-03 A | EK000MD32A | 100% | 2005-04-11 | 2005-04-22 | 2006-07-29 | 0 | 0 | 00 | EK | R20 | 000 | PA | M | X | E | MD302 |  | CE |  |
| EK000MD34P |  | Confirm Analytical Design for ERW - MD304 | 9d | 2005-04-11 A | 2005-04-19 A | EK000MD34A | 100% | 2005-04-11 | 2005-04-21 | 2006-07-29 | 0 | 0 | 00 | EK | R20 | 000 | PA | M | X | E | MD304 |  | CE |  |
| EK000MU41A |  | Develop & Issue Load Sheets for ERW - MU410 | 5d | 2005-04-11 A | 2005-04-19 A | EK000ML31A | 100% | 2005-04-11 | 2005-04-15 | 2006-07-29 | 0 | 0 | 00 | EK | R10 | 000 | PR | M | X | E | MU410 |  | PE | 05 |
| EK000PR080 |  | Input to Process Guarantees | 25d | 2005-04-13 A | 2005-06-03 A | EK000PR060 SS+20d, EK000PR140 FF | 100% | 2005-04-13 | 2005-05-17 | 2006-07-29 | 0 | 0 | 00 | EK | R10 | 000 | PR | Y | X | E |  |  |  |  |
| EK000MJ32A |  | Develop & Issue Load Sheets for ERW - MJ302 | 2d | 2005-04-14 A | 2005-04-19 A | EK000MJ31A, EK000PR020 SS, EK000PR030 | 100% | 2005-04-14 | 2005-04-15 | 2006-07-29 | 0 | 0 | 00 | EK | R10 | 000 | PR | M | X | E | MJ302 |  | FE |  |
| EK000MD45A |  | Develop & Issue Load Sheets for ERW - MD405 | 2d | 2005-04-15 A | 2005-04-19 A | EK000MD44A FF, EK000PR020, EK000PR030 | 100% | 2005-04-15 | 2005-04-18 | 2006-07-29 | 0 | 0 | 00 | EK | R10 | 000 | PR | M | X | E | MD405 |  | CE |  |
| EK000ML43A |  | Develop & Issue Load Sheets for ERW - ML430 | 3d | 2005-04-15 A | 2005-04-19 A | EK000ML42A, EK000PR020, EK000PR030 | 100% |  |  | 2006-07-29 | 0 | 0 | 00 | EK | R10 | 000 | PR | M | X | E | ML430 |  | NE |  |
| EK000ML44A |  | Develop & Issue Load Sheets for ERW - ML440 | 3d | 2005-04-15 A | 2005-04-19 A | EK000ML43A, EK000PR020, EK000PR030 | 100% |  |  | 2006-07-29 | 0 | 0 | 00 | EK | R10 | 000 | PR | M | X | E | ML440 |  | NE |  |
| EK000ML42A |  | Develop & Issue Load Sheets for ERW - ML420 | 3d | 2005-04-18 A | 2005-04-19 A | EK000ML31A FS+3d, EK000MU41A, EK000PR020, EK000PR030 | 100% | 2005-04-18 | 2005-04-20 | 2006-07-29 | 0 | 0 | 00 | EK | R10 | 000 | PR | M | X | E | ML420 |  | NE |  |
| EK000MU35A |  | Develop & Issue Load Sheets for ERW - MU350 | 5d | 2005-04-18 A | 2005-04-19 A | EK000MU41A | 100% | 2005-04-18 | 2005-04-22 | 2006-07-29 | 0 | 0 | 00 | EK | R10 | 000 | PR | M | X | E | MU350 |  | FE |  |
| EK000MC63A |  | Develop & Issue Load Sheets for ERW - MC630 | 3d | 2005-04-19 A | 2005-04-22 A | EK000MC61A, EK000PR020, EK000PR030 | 100% | 2005-04-19 | 2005-04-21 | 2006-07-29 | 0 | 0 | 00 | EK | R10 | 000 | PR | M | X | E | MC630 |  | NE |  |
| EK000MD47A |  | Develop & Issue Load Sheets for ERW - MD406 | 3d | 2005-04-20 A | 2005-04-22 A | EK000MD45A | 100% |  |  | 2006-07-29 | 0 | 0 | 00 | EK | R10 | 000 | PR | M | X | E | MD406 |  | CE |  |
| EK000MF31P |  | Confirm Analytical Design for ERW - MF301 | 10d | 2005-04-25 A | 2005-04-29 A | EK000MF31A | 100% | 2005-04-25 | 2005-05-06 | 2006-07-29 | 0 | 0 | 00 | EK | R20 | 000 | PA | M | X | E | MF301 |  |  |  |
| EK000PR070 |  | Effluent Summary | 5d | 2005-04-25 A | 2005-04-29 A | EK000PR060 SS+20d | 100% |  |  | 2006-07-29 | 0 | 0 | 00 | EK | R10 | 000 | PR | Y | X | E |  |  |  |  |
| EK000MD45P |  | Confirm Analytical Design for ERW - MD405 | 10d | 2005-04-29 A | 2005-05-26 A | EK000MD45A | 100% | 2005-05-09 | 2005-05-20 | 2006-07-29 | 0 | 0 | 00 | EK | R20 | 000 | PA | M | X | E | MD405 |  | CE |  |
| EK000PR065 |  | Catalyst and Chemical Specs | 5d | 2005-05-02 A | 2005-05-09 A | EK000PR060 SS+20d | 100% | 2005-04-25 | 2005-04-29 | 2006-07-29 | 0 | 0 | 00 | EK | R10 | 000 | PR | Y | X | E |  |  |  |  |
| EK000PR075 |  | Process Description | 5d | 2005-05-02 A | 2005-05-26 A | EK000PR060 SS+20d | 100% | 2005-04-25 | 2005-04-29 | 2006-07-29 | 0 | 0 | 00 | EK | R10 | 000 | PR | Y | X | E |  |  |  |  |
| EK000MD44P |  | Confirm Analytical Design for ERW - MD404 | 10d | 2005-05-02 A | 2005-05-04 A | EK000MD44A | 100% | 2005-05-02 | 2005-05-13 | 2006-07-29 | 0 | 0 | 00 | EK | R20 | 000 | PA | M | X | E | MD404 |  | NE |  |
| EK000MD22P |  | Confirm Analytical Design for ERW - MD202 | 10d | 2005-05-06 A | 2005-05-16 A | EK000MD22A | 100% | 2005-05-06 | 2005-05-19 | 2006-07-29 | 0 | 0 | 00 | EK | R20 | 000 | PA | M | X | E | MD202 |  | FE |  |
| EK000PR140 |  | Formal Issue of Process Release | 5d | 2005-05-18 A | 2005-06-08 A | EK000PR060, EK000PR065, EK000PR070, EK000PR075 FF, EK000PR145 | 100% | 2005-05-18 | 2005-05-24 | 2006-07-29 | 0 | 0 | 00 | EK | R10 | 000 | PR | Y | X | E |  |  |  |  |
| EK000MD47P |  | Confirm Analytical Design for ERW - MD406 | 10d | 2005-05-19 A | 2005-05-23 A | EK000MD47A | 100% | 2005-05-20 | 2005-06-03 | 2006-07-29 | 0 | 0 | 00 | EK | R20 | 000 | PA | M | X | E | MD406 |  | CE |  |
| EK000MD44Q |  | Develop Analytical Sketches for ERW - MD404 | 10d | 2005-05-20 A | 2005-05-27 A | EK000MD44A | 100% | 2005-05-20 | 2005-06-03 | 2006-07-29 | 0 | 0 | 00 | EK | R20 | 000 | PA | M | X | E | MD404 |  | NE |  |
| EK000MD46B |  | Develop/Issue Load Sht & Design Data ERW - MD411 | 4d | 2005-05-23 A | 2005-06-03 A | EK000SY015, EK000SY075 SS+25d | 100% | 2005-05-31 | 2005-06-03 | 2006-07-29 | 0 | 0 | 00 | EK | R20 | 000 | PR | M | X | E | MD411 |  | PE |  |

Notes:
- EK000PR020: P3 Activity Log Info: EOR issued 3/15
- EK000MD33A: P3 Activity Log Info: 105-D, 122-C1/2/3 (Ammonia Synthesis Converter)
- EK000MJ21A: P3 Activity Log Info: 102-J & 105-J Issued 3/18
- EK000MD21A: P3 Activity Log Info: 101-E, 102-E (Absorber, Stripper)
- EK000MD33P: P3 Activity Log Info: 105-D, 122-C1/2/3 / (Ammonia Synthesis Converter)
- EK000MD43A: P3 Activity Log Info: 106-F (Ammonia Separator)
- EK000MD44A: P3 Activity Log Info: 107-F, 109-F, 132-F
- EK000MD34A: P3 Activity Log Info: 106-D, 108-DA/DB, 109-DA/DB
- EK000MD21P: P3 Activity Log Info: 101-E, 102-E (Absorber, Stripper)
- EK000MD21Q: P3 Activity Log Info: 101-E, 102-E (Absorber, / Stripper)
- EK000MD31A: P3 Activity Log Info: 103-D (Secondary Reformer)
- EK000MD32A: P3 Activity Log Info: 104-D1/D2 (High Temp Shift Converters)
- EK000MD41A: P3 Activity Log Info: 101-f (Steam Drum)
- EK000MF31A: P3 Activity Log Info: 114-F (Benefield Solution Storage Tank)
- EK000MD42A: P3 Activity Log Info: 102-F1/F2, 104-F, 144-F (ISBL Drums) / Actual
- EK000MD51A: P3 Activity Log Info: 107-D (Primary Reformer Effluent Transfer Line) / Actual
- EK000MJ35A: P3 Activity Log Info: 111-J,112-J,113-J/JA,115-J,116-J/JA,120-J/JA / 121-J/JA,124-J/JA
- EK000MC23A: P3 Activity Log Info: 105-C,106-C,109-C,111-C,114-C,172-C
- EK000ML31A: P3 Activity Log Info: Actual 4 Apr
- EK000MD22A: P3 Activity Log Info: 103-E, 104-E, 105-E, 150-E / Actuals
- EK000MD42P: P3 Activity Log Info: 102-F1/F2, 104-F, 144-F (ISBL Drums)
- EK000MJ37A: P3 Activity Log Info: 130-J/JA,131-J/JA, Metering Pumps
- EK000MC61A: P3 Activity Log Info: 161-C,188-CA,188-CB,188-CC
- EK000MD34R: P3 Activity Log Info: 108-DA/DB / (Desulferizers)
- EK000MD43P: P3 Activity Log Info: 106-F (Ammonia Separator)
- EK000MD31P: P3 Activity Log Info: 103-D (Secondary Reformer)
- EK000MD32P: P3 Activity Log Info: 104-D1/D2 (High Temp Shift Converters)
- EK000MD34P: P3 Activity Log Info: 106-D, 109-DA/DB / (Methanator, Mole Sieve Driers)
- EK000MU41A: P3 Activity Log Info: 2002-U
- EK000MJ32A: P3 Activity Log Info: Lean Solution Pumps 107-J
- EK000MD45A: P3 Activity Log Info: 115/118/156/157-F (Drums, Sumps, Filter)
- EK000ML43A: P3 Activity Log Info: 110-L BenfIeld Solution Mixer
- EK000ML44A: P3 Activity Log Info: 161-L Coalescer
- EK000ML42A: P3 Activity Log Info: 104-L,115-L
- EK000MU35A: P3 Activity Log Info: Deaerator 101-U
- EK000MC63A: P3 Activity Log Info: 107-C
- EK000MD47A: P3 Activity Log Info: 103-F CO2 Stripper Cond. KO Drum
- EK000MF31P: P3 Activity Log Info: 114-F (Benefield Solution Storage Tank)
- EK000MD45P: P3 Activity Log Info: 115/118/156/157-F (Drums, Sumps, / Filter)
- EK000MD44P: P3 Activity Log Info: 107-F, 109-F (Ammonia / Letdwn Drum, Refrg Rec'ver)
- EK000MD22P: P3 Activity Log Info: 103-E, 104-E, 105-E, 150-E (Ammonia / Scrubbers, Distl Column, Cond Stripper)
- EK000MD47P: P3 Activity Log Info: 103-F CO2 Stripper Cond. KO / Drum
- EK000MD44Q: P3 Activity Log Info: 132-F ( Lean Flash)
- EK000MD46B: P3 Activity Log Info: 2006-F, 2203-F, 2204-F, / 2205-F

| ID | WBS | Activity | Duration | Start | Finish | Predecessors | Complete | Planned start | Planned finish | Calendar | zData Date | PCA Criticality Index | PCA Duration Sensitivity | EB02 - UNIT | EB01 - RESP | EB06 - WORK OP | EB03 - AREA | EB05 - DISCIPLINE | EB07 - REQN | EB10 - KEY | EB04 - CLASS | EB11 - FLAG | EB00 - EPC | EB17 - Suffix | EB14 - RISK | EB09 - IPMS |
| --- | --- | --- | --- | --- | --- | --- | --- | --- | --- | --- | --- | --- | --- | --- | --- | --- | --- | --- | --- | --- | --- | --- | --- | --- | --- | --- |
| EK000MD46P |  | Confirm Analytical Design for ERW - MD411 | 5d | 2005-06-01 A | 2005-06-10 A | EK000MD46B FF+2d | 100% | 2005-06-01 | 2005-06-07 |  | 2006-07-29 | 0 | 0 | 00 | EK | R20 | 000 | PA | MD411 | PE | M | X | E |  |  |  |
| EK000PR600 |  | MD305 Merc. Removal Bed - Develop & Issue Load Sheets for ERW | 2d | 2005-11-07 A | 2005-11-09 A | EK000PR140 | 100% | 2005-11-07 | 2005-11-08 |  | 2006-07-29 | 0 | 0 | 00 | EK | R10 | 000 | PR | MD305 | FE | M | X | E |  |  |  |
| EK000PR610 |  | MD305 Merc. Removal Bed - Analytical Design | 5d | 2005-11-10 A | 2005-12-27 A | EK000PR600 | 100% | 2005-11-09 | 2005-11-15 |  | 2006-07-29 | 0 | 0 | 00 | EK | R20 | 000 | PR | MD305 | FE | M | X | E |  |  |  |
| EK000MJ37R |  | Develop & Issue Load Sheets for ERW - MJ307 | 5d | 2005-12-05 A | 2005-12-09 A | EK000PR020, EK000PR030 | 100% | 2006-01-16 | 2006-01-20 |  | 2006-07-29 | 0 | 0 | 00 | EK | R10 | 05A | PR | MJ307 | CE | M | X | E |  |  |  |
| EK000MJ38R |  | Develop & Issue Load Sheets for ERW - MJ308 | 5d | 2005-12-05 A | 2005-12-09 A | EK000PR020, EK000PR030 | 100% | 2006-01-16 | 2006-01-20 |  | 2006-07-29 | 0 | 0 | 00 | EK | R10 | 05A | PR | MJ308 | CE | M | X | E |  |  |  |
|  | SE | **Safety Engineering** |  | 2005-03-25 | 2006-10-27 |  |  |  |  |  |  |  |  |  |  |  |  |  |  |  |  |  |  |  |  |  |
| EK000FP025 |  | FP Gas Detection Location Plans - Not Required | 105d | 2005-03-25 A | 2005-09-23 A | EK020PI010 SS | 100% | 2005-06-13 | 2005-11-08 |  | 2006-07-29 | 0 | 0 | 00 | EK | ZF1 | 000 | FP |  |  | Z | X | E |  |  |  |
| EK000FP050 |  | FP Overall Firewater P&IDs - Development & Issue ICA | 53d | 2005-05-06 A | 2005-07-19 A | EK050SY040 FF | 100% | 2005-05-06 | 2005-07-22 |  | 2006-07-29 | 0 | 0 | 00 | EK | YP0 | 000 | FP |  |  | Y | X | E |  |  |  |
| EK000FP055 |  | FP Overall Firewater P&IDs - Development & Issue IPL | 70d | 2005-07-20 A | 2005-12-01 A | EK000FP050, EK050SY060 FF | 100% | 2005-08-22 | 2005-11-25 |  | 2006-07-29 | 0 | 0 | 00 | EK | YP0 | 000 | FP |  |  | Y | X | E |  |  |  |
| EK000FP060 |  | FP Overall Firewater P&IDs - Development & Issue IFD | 65d | 2006-08-21 A | 2006-09-14 A | EK000FP055, EK020SY070 FF, EM02MSY172 FF, EM02NSY172 FF, EM02PSY172 FF, EM02QSY172 FF, EM5ASY172 FF, EM05BSY172 FF, EM01ASY172 FF, EM02ASY172 FF | 100% | 2006-08-21 | 2006-11-17 |  | 2006-07-29 | 0 | 0 | 00 | EK | YP0 | 000 | FP |  |  | Y | X | E |  |  |  |
| EK000FP065 |  | FP Overall Firewater P&IDs - Development & Issue IFC | 20d | 2006-10-02 A | 2006-10-27 A | EK000FP060, EM01ASY272 FF, EM02MSY272 FF, EM02NSY272 FF, EM02PSY272 FF, EM02QSY272 FF | 100% | 2006-12-18 | 2007-01-12 |  | 2006-07-29 | 0 | 0 | 00 | EK | YP0 | 000 | FP |  |  | Y | X | E |  |  |  |
|  | SY | **Systems Engineering** |  | 2005-02-21 | 2006-03-31 |  |  |  |  |  |  |  |  |  |  |  |  |  |  |  |  |  |  |  |  |  |
| EK000SY005 |  | Systems Work Plan & Project Setup | 45d | 2005-02-21 A | 2005-04-25 A | EK000PE090 FF+5d, EK000YA002 SS | 100% | 2005-03-07 | 2005-05-06 |  | 2006-07-29 | 0 | 0 | 00 | EK | G10 | 000 | SY |  |  | Y | X | E |  |  |  |
| EK000SY010 |  | MEC Convert prelim P&ID's to Smart Plant P&ID's | 20d | 2005-02-21 A | 2005-03-18 A | EK000YA002 SS | 100% |  |  |  | 2006-07-29 | 0 | 0 | 00 | EK | YP0 | 000 | SY |  | Y0 | Y | X | E |  |  |  |
| EK000SY015 |  | Develop Utility & offsite block flow diagrams | 31d | 2005-03-07 A | 2005-04-15 A | EK000PR040 FF, EK000PR045 FF, EK000YA002 SS | 100% | 2005-03-07 | 2005-04-18 |  | 2006-07-29 | 0 | 0 | 00 | EK | Y80 | 000 | SY |  |  | Y | X | E |  |  |  |
| EK000SY065 |  | Complete Utility Flow Diagrams | 14d | 2005-03-07 A | 2005-05-04 A | EK000SY015 SS | 100% | 2005-04-11 | 2005-04-28 |  | 2006-07-29 | 0 | 0 | 00 | EK | Y80 | 000 | SY |  |  | Y | X | E | E2B2 |  |  |
| EK000ML50B |  | Develop/Issue Load Sht & Design Data ERW - ML500 | 5d | 2005-03-29 A | 2005-04-04 A | EK000PR060 SS | 100% |  |  |  | 2006-07-29 | 0 | 0 | 00 | EK | Y40 | 000 | SY | ML500 | FE | Y | X | E |  |  |  |
| EK000ML31B |  | Develop & Issue Design Data for ERW - ML313 | 5d | 2005-04-05 A | 2005-04-14 A | EK000ML31A | 100% | 2005-04-05 | 2005-04-11 |  | 2006-07-29 | 0 | 0 | 00 | EK | Y40 | 000 | SY | ML313 | FE | Y | X | E |  |  |  |
| EK000MU41B |  | Develop & Issue Design Data for ERW - MU410 | 5d | 2005-04-18 A | 2005-04-20 A | EK000MU41A | 100% | 2005-04-18 | 2005-04-22 |  | 2006-07-29 | 0 | 0 | 00 | EK | Y40 | 000 | SY | MU410 | PE | Y | X | E |  | 05 |  |
| EK000ML44B |  | Develop & Issue Design Data for ERW - ML440 | 5d | 2005-04-25 A | 2005-04-27 A | EK000ML44A | 100% | 2005-04-25 | 2005-04-29 |  | 2006-07-29 | 0 | 0 | 00 | EK | Y40 | 000 | SY | ML440 | NE | Y | X | E |  |  |  |
| EK000MU61B |  | Develop/Issue Load Sht & Design Data ERW - MU611 | 10d | 2005-05-02 A | 2005-06-14 A | EK000GE010 FF+5d, EK000SY015 SS+15d, EK000SY060 FF, EK000SY075 SS+5d | 100% | 2005-05-02 | 2005-05-13 |  | 2006-07-29 | 0 | 0 | 00 | EK | Y40 | 000 | SY | MU611 | PE | Y | X | E |  |  |  |
| EK000MU30B |  | Develop/Issue Load Sht & Design Data ERW - MU300 | 15d | 2005-05-09 A | 2005-05-26 A | EK000SY015, EK000SY075 SS+20d | 100% | 2005-05-09 | 2005-05-27 |  | 2006-07-29 | 0 | 0 | 00 | EK | Y40 | 000 | SY | MU300 | FE | Y | X | E |  | 09 |  |
| EK000ML51B |  | Develop/Issue Load Sht & Design Data ERW - ML512 | 4d | 2005-05-16 A | 2005-05-20 A | EK000ML50B, EK000SY015, EK000SY075 SS+15d | 100% | 2005-05-31 | 2005-06-03 |  | 2006-07-29 | 0 | 0 | 00 | EK | Y40 | 000 | SY | ML512 | FE | Y | X | E |  |  |  |
| EK000ML33B |  | Develop/Issue Load Sht & Design Data ERW - ML330 | 5d | 2005-05-16 A | 2005-05-26 A | EK000SY015, EK000SY075 SS+25d | 100% | 2005-05-16 | 2005-05-20 |  | 2006-07-29 | 0 | 0 | 00 | EK | Y40 | 000 | SY | ML330 | NE | Y | X | E |  |  |  |
| EK000ML42B |  | Develop & Issue Design Data for ERW - ML420 | 5d | 2005-05-16 A | 2005-05-20 A | EK000ML42A | 100% |  |  |  | 2006-07-29 | 0 | 0 | 00 | EK | Y40 | 000 | SY | ML420 | NE | Y | X | E |  |  |  |
| EK000MU11B |  | 05B MU311 Develop/Issue Load Sht & Design Data ERW | 5d | 2005-05-23 A | 2005-06-16 A | EK000SY015, EK000SY075 | 100% | 2006-01-30 | 2006-02-03 | EBWK - Global | 2006-07-29 | 0 | 0 | 00 | EK | Y40 | 000 | SY | MU311 | NE | Y |  | E |  |  |  |
| EK000MU25B |  | 02G MU225 Develop/Issue Load Sht & Design Data ERW | 5d | 2005-05-23 A | 2005-06-16 A | EK000SY015, EK000SY075 | 100% | 2006-02-27 | 2006-03-03 | EBWK - Global | 2006-07-29 | 0 | 0 | 00 | EK | Y40 | 000 | SY | MU225 | NE | Y |  | E |  |  |  |
| EK000MU32B |  | 01D MU322 Develop/Issue Load Sht & Design Data ERW | 5d | 2005-05-23 A | 2005-06-16 A | EK000SY015, EK000SY075 | 100% | 2006-01-30 | 2006-02-03 | EBWK - Global | 2006-07-29 | 0 | 0 | 00 | EK | Y40 | 000 | SY | MU322 | NE | Y |  | E |  |  |  |
| EK000MU31B |  | Develop/Issue Load Sht & Design Data ERW - MU310 | 5d | 2005-05-23 A | 2005-06-16 A | EK000SY015, EK000SY075 SS+30d, EK000MU34B FF | 100% | 2005-05-23 | 2005-05-27 |  | 2006-07-29 | 0 | 0 | 00 | EK | Y40 | 000 | SY | MU310 | NE | Y | X | E |  |  |  |
| EK000MU35B |  | Develop & Issue Design Data for ERW - MU350 | 9d | 2005-05-31 A | 2005-06-14 A | EK000MU35A | 100% | 2005-05-31 | 2005-06-10 |  | 2006-07-29 | 0 | 0 | 00 | EK | Y40 | 000 | SY | MU350 | FE | Y | X | E |  |  |  |
| EK000MU11O |  | Finalize Water Analysis for Design Basis | 15d | 2005-06-01 A | 2005-08-16 A | EK000MU11B | 100% | 2006-02-06 | 2006-02-24 | EBWK - Global | 2006-07-29 | 0 | 0 | 00 | EK | G40 | 000 | SY | MU311 |  | Y |  | E |  |  |  |
| EK000MU25O |  | Finalize Water Analysis for Design Basis | 15d | 2005-06-01 A | 2005-08-16 A | EK000MU25B | 100% | 2006-02-27 | 2006-03-17 | EBWK - Global | 2006-07-29 | 0 | 0 | 00 | EK | G40 | 000 | SY | MU225 |  | Y |  | E |  |  |  |
| EK000MU310 |  | Finalize Water Analysis for Design Basis | 15d | 2005-06-01 A | 2005-08-16 A | EK000YA002 SS | 100% | 2005-07-27 | 2005-08-16 |  | 2006-07-29 | 0 | 0 | 00 | EK | G40 | 000 | SY | MU310 |  | Y | X | E |  |  |  |
| EK000MU32O |  | Finalize Water Analysis for Design Basis | 15d | 2005-06-01 A | 2005-08-16 A | EK000MU32B | 100% | 2006-02-06 | 2006-02-24 | EBWK - Global | 2006-07-29 | 0 | 0 | 00 | EK | G40 | 000 | SY | MU322 |  | Y |  | E |  |  |  |
| EK000MU33B |  | Develop/Issue Load Sht & Design Data ERW - MU330 | 5d | 2005-06-06 A | 2005-06-20 A | EK000MU30B, EK000SY075 SS+25d | 100% | 2005-06-06 | 2005-06-10 |  | 2006-07-29 | 0 | 0 | 00 | EK | Y40 | 000 | SY | MU330 | FE | Y | X | E |  |  |  |
| EK000MU21B |  | Develop/Issue Load Sht & Design Data ERW - MU221 | 5d | 2005-06-07 A | 2005-06-10 A | EK000SY015, EK000SY075 SS+40d | 100% | 2005-06-07 | 2005-06-13 |  | 2006-07-29 | 0 | 0 | 00 | EK | Y40 | 000 | SY | MU221 | NE | Y | X | E |  |  |  |
| EK000MU22B |  | Develop/Issue Load Sht & Design Data ERW - MU222 | 5d | 2005-06-07 A | 2005-06-20 A | EK000SY015, EK000SY075 SS+40d | 100% | 2005-06-07 | 2005-06-13 |  | 2006-07-29 | 0 | 0 | 00 | EK | Y40 | 000 | SY | MU222 | NE | Y | X | E |  |  |  |
| EK000MU29B |  | Develop/Issue Load Sht & Design Data ERW - MU292 | 5d | 2005-06-07 A | 2005-06-20 A | EK000MU33B FF+1d, EK000SY015, EK000SY075 SS+30d | 100% | 2005-06-07 | 2005-06-13 |  | 2006-07-29 | 0 | 0 | 00 | EK | Y40 | 000 | SY | MU292 | NE | Y | X | E |  |  |  |
| EK000MU34B |  | Develop/Issue Load Sht & Design Data ERW - Chlorination Unit | 5d | 2005-07-11 A | 2005-07-15 A | EK000MU30B, EK000SY015, EK000SY075 FF+7d | 100% |  |  |  | 2006-07-29 | 0 | 0 | 00 | EK | Y40 | 000 | SY | MU340 | NE | Y | X | E |  |  |  |
| PK000PSA8C |  | 000 Relief Valves - Technical Evaluation | 5d | 2006-01-23 A | 2006-01-27 A | PK000PSA8B | 100% | 2006-02-13 | 2006-02-17 |  | 2006-07-29 | 0 | 0 | 00 | EK | Y60 | 000 | SY | PSA08 | IR | Y |  | E |  |  | D |
| EK000SY095 |  | 010 P&ID's - Tech Review | 5d | 2006-02-27 A | 2006-03-01 A | EK010SY090 FS+10d, EK030SY090 FS+10d, EK050SY090 FS+10d | 100% | 2006-02-27 | 2006-03-03 |  | 2006-07-29 | 0 | 0 | 00 | EK | YP0 | 000 | SY |  |  | Y | X | E |  |  |  |
| EK000PS00C |  | 000 SP Items - Technical Evaluation | 5d | 2006-03-14 A | 2006-03-31 A | PK000PS00B | 100% | 2006-03-27 | 2006-03-31 |  | 2006-07-29 | 0 | 0 | 00 | EK | P90 | 000 | SY | PS000 | IR | Y |  | E |  |  | D |

Notes:
- EK000MD46P: P3 Activity Log Info: 2006-F, 2203-F, 2204-F, 2205-F (Blr Blowdwn, / Caustic Tnk, Acid Drm, Flare KO)
- EK000PR600: P3 Activity Log Info: 103-E, 104-E, 105-E, 150-E / Actuals
- EK000PR610: P3 Activity Log Info: 103-E, 104-E, 105-E, 150-E (Ammonia / Scrubbers, Distl Column, Cond Stripper)
- EK000MJ37R: P3 Activity Log Info: 111-J,112-J,113-J/JA,115-J,116-J/JA,120-J/JA / 121-J/JA,124-J/JA
- EK000MJ38R: P3 Activity Log Info: 111-J,112-J,113-J/JA,115-J,116-J/JA,120-J/JA / 121-J/JA,124-J/JA
- EK000ML50B: P3 Activity Log Info: PAI/IA Compressor 2003-L / Actual 4/4
- EK000ML31B: P3 Activity Log Info: 160-L(Purge Gas Recovery Unit)
- EK000MU41B: P3 Activity Log Info: Package Boiler System
- EK000ML44B: P3 Activity Log Info: 161-L (Coalescer)
- EK000MU61B: P3 Activity Log Info: Cooling Water / Tower
- EK000MU30B: P3 Activity Log Info: Electro Dialysis Reversal / Unit 2102-U
- EK000ML51B: P3 Activity Log Info: Ammonia Loading Arm / 2102-L
- EK000ML33B: P3 Activity Log Info: Ammonia Refrig Pkg / 2101-L
- EK000ML42B: P3 Activity Log Info: 104-L & 115-L (Benifield / Filters)
- EK000MU31B: P3 Activity Log Info: Injection Systems
- EK000MU35B: P3 Activity Log Info: Deaerator 101-U
- EK000MU33B: P3 Activity Log Info: Water Treatment Unit / 2001-U
- EK000MU21B: P3 Activity Log Info: Sanitary Lift Stations / 2402/3-L
- EK000MU22B: P3 Activity Log Info: Sanitary Treatment Pkg / 2401-U
- EK000MU29B: P3 Activity Log Info: Oil Skimmer 2404-U
- EK000MU34B: P3 Activity Log Info: Chlorination Units

| ID | WBS | Activity | Duration | Start | Finish | Predecessors | Complete | Planned start | Planned finish | Calendar | zData Date | Optimistic Duration | Most Likely Duration | Pessimistic Duration | PCA Criticality Index | PCA Duration Sensitivity | EB02 - UNIT | EB01 - RESP | EB06 - WORK OP | EB03 - AREA | EB05 - DISCIPLINE | EB08 - TAG | EB10 - KEY | EB04 - CLASS | EB09 - IPMS | EB00 - EPC | user_text1 | EB07 - REQN | EB21 - Rev 2 Risk Associations | user_integer1 | EB11 - FLAG | EB17 - Suffix | Sequence | User Defined Field 1 | User Definer Field 2 | EB15 - Civil / U/G Path of Construction | EB16 - Piping Path of Construction |
| --- | --- | --- | --- | --- | --- | --- | --- | --- | --- | --- | --- | --- | --- | --- | --- | --- | --- | --- | --- | --- | --- | --- | --- | --- | --- | --- | --- | --- | --- | --- | --- | --- | --- | --- | --- | --- | --- |
|  | 01 | **Offsites** |  | 2005-03-21 | 2007-01-29 |  |  |  |  |  |  |  |  |  |  |  |  |  |  |  |  |  |  |  |  |  |  |  |  |  |  |  |  |  |  |  |  |
|  | AR | **Architecture Engineering** |  |  |  |  |  |  |  |  |  |  |  |  |  |  |  |  |  |  |  |  |  |  |  |  |  |  |  |  |  |  |  |  |  |  |  |
|  | PE | **Project Engineering** |  |  |  |  |  |  |  |  |  |  |  |  |  |  |  |  |  |  |  |  |  |  |  |  |  |  |  |  |  |  |  |  |  |  |  |
|  | PS | **Planning & Scheduling** |  |  |  |  |  |  |  |  |  |  |  |  |  |  |  |  |  |  |  |  |  |  |  |  |  |  |  |  |  |  |  |  |  |  |  |
|  | QM | **Quality Mgmt.** |  |  |  |  |  |  |  |  |  |  |  |  |  |  |  |  |  |  |  |  |  |  |  |  |  |  |  |  |  |  |  |  |  |  |  |
|  | CE | **Chief Engineering** |  |  |  |  |  |  |  |  |  |  |  |  |  |  |  |  |  |  |  |  |  |  |  |  |  |  |  |  |  |  |  |  |  |  |  |
|  | CV | **Civil Engineering** |  |  |  |  |  |  |  |  |  |  |  |  |  |  |  |  |  |  |  |  |  |  |  |  |  |  |  |  |  |  |  |  |  |  |  |
|  | EL | **Electrical Engineering** |  | 2006-01-30 | 2006-12-08 |  |  |  |  |  |  |  |  |  |  |  |  |  |  |  |  |  |  |  |  |  |  |  |  |  |  |  |  |  |  |  |  |
| PK000EL000 |  | OSBL Motors & Drivers - Prod. V. Data (Information Only) | 61d | 2006-01-30 A | 2006-10-27 A | PK01BMJV01 FF, PK01BMJV02 FF, PK01BMJV03 FF, PK01DMJV03 FF, PK05AMF35 FF, PK05AMB48 FF, PK03CMJV03 FF, PK03DMJV03 FF, PK05AMJV03 FF, PK05AMJV06 FF, PK01AMJV03 FF, PK01AMLV03 FF, PK01BMJV06 FF, PK05AMJV09 FF, PK01HMJV02 FF, PK05AMJV11 FF, PK03BMUV03 FF, PK03FMUV03 FF, PK03AMLV03 FF, PK05AMLV06 FF, PK05BMLV03 FF, PK03BMUV06 FF, PK01CMUV03 FF, PK01DMUV03 FF, PK01DMUV06 FF, PK03FMUV06 FF, PK03FMUV09 FF, PK01DMUV09 FF, PK03EMUV03 FF, PK000MU11N FF | 100% | 2006-04-24 | 2006-07-17 | EBWK - Global | 2006-07-29 | 60 | 70 | 80 | 13.1 | 0 | 01 | EK | EB0 | 010 | EL | X | P16 | E | M | E |  |  |  |  |  |  |  |  |  |  |  |
| PK000E001M |  | Sub Stations - Production V. Data | 20d | 2006-09-28 A | 2006-10-31 A | PK000E001J | 100% | 2006-09-28 | 2006-10-25 |  | 2006-07-29 | 15 | 20 | 30 | 0 | 0.1 | 01 | EK | EF1 | 01H | EL |  | P16 | E | M | E | 80% of needed Data recieved. | E0001 | 06 |  |  |  |  |  |  |  |  |
| PK000E002M |  | Transformer - Production V. Data | 20d | 2006-09-28 A | 2006-10-31 A | PK000E002J | 100% | 2006-09-28 | 2006-10-25 |  | 2006-07-29 | 15 | 20 | 30 | 0 | 0 | 01 | EK | EF5 | 01H | EL |  | P16 | E | M | E |  | E0002 | 06 |  |  |  |  |  |  |  |  |
| PK000E004M |  | UPS System - Production V. Data | 20d | 2006-11-10 A | 2006-11-17 A | PK000E004J | 100% | 2006-11-10 | 2006-12-07 |  | 2006-07-29 | 15 | 20 | 30 | 0 | 0 | 01 | EK | EF6 | 01H | EL |  | P16 | E | M | E |  | E0004 | 06 | 40 | CD |  |  |  |  |  |  |
| PK010E008L |  | 540-SG Admin. Area Pwr Supply - Production V. Data | 35d | 2006-12-04 A | 2006-12-08 A | PK010E008J | 100% | 2006-12-18 | 2007-02-05 |  | 2006-07-29 | 20 | 25 | 35 | 0 | 5.8 | 01 | EK | EF5 | 01H | EL |  | P16 | E | M | E |  | E0008 | 06 | 35 | CD |  |  |  |  |  |  |
|  | EV | **Environmental Engineering** |  |  |  |  |  |  |  |  |  |  |  |  |  |  |  |  |  |  |  |  |  |  |  |  |  |  |  |  |  |  |  |  |  |  |  |
|  | FP | **Fire Protection Engineering** |  |  |  |  |  |  |  |  |  |  |  |  |  |  |  |  |  |  |  |  |  |  |  |  |  |  |  |  |  |  |  |  |  |  |  |
|  | GE | **General Engineering (All Disciplines)** |  |  |  |  |  |  |  |  |  |  |  |  |  |  |  |  |  |  |  |  |  |  |  |  |  |  |  |  |  |  |  |  |  |  |  |
|  | IC | **Control Sytems Engineering** |  | 2005-10-24 | 2006-11-14 |  |  |  |  |  |  |  |  |  |  |  |  |  |  |  |  |  |  |  |  |  |  |  |  |  |  |  |  |  |  |  |  |
| EK010I1240 |  | Rotameters - D/S,Sizing,Tech Eval | 15d | 2005-10-24 A | 2005-12-16 A | EK010SY135 | 100% | 2005-10-31 | 2005-11-18 |  | 2006-07-29 |  |  |  | 0 | 0 | 01 | EK | I21 | 010 | IC |  | IR | I |  | E |  | I2124 |  |  | X | E2B2 |  |  |  |  |  |
| EK010IC242 |  | MOV Valves - D/S,Sizing,Tech Eval | 15d | 2005-10-25 A | 2005-12-15 A | EK010SY135 | 100% | 2005-10-25 | 2005-11-14 |  | 2006-07-29 |  |  |  | 0 | 0 | 01 | EK | I22 | 010 | IC |  | IR | I |  | E |  | I2220 |  |  | X | E2B2 |  |  |  |  |  |
| EK010I1100 |  | 010 Orific Plates - D/S,Sizing,Tech Eval | 15d | 2005-11-03 A | 2005-11-23 A | EK010SY135, EK030I1100 FF | 100% |  |  |  | 2006-07-29 |  |  |  | 0 | 0 | 01 | EK | I21 | 010 | IC |  | IR | I |  | E |  | I2110 |  |  | X | E2B2 |  |  |  |  |  |
| EK010I1150 |  | Annubars - D/S,Sizing,Tech Eval | 15d | 2005-11-03 A | 2005-12-02 A | EK010SY135 | 100% | 2005-11-03 | 2005-11-23 |  | 2006-07-29 |  |  |  | 0 | 0 | 01 | EK | I21 | 010 | IC |  | IR | I |  | E |  | I2115 |  |  | X | E2B2 |  |  |  |  |  |
| EK010I1210 |  | Vortex Meters - D/S,Sizing,Tech Eval | 15d | 2005-11-03 A | 2005-12-02 A | EK010SY135 | 100% | 2005-11-03 | 2005-11-23 |  | 2006-07-29 |  |  |  | 0 | 0 | 01 | EK | I21 | 010 | IC |  | IR | I |  | E |  | I2121 |  |  | X | E2B2 |  |  |  |  |  |
| EK010IC210 |  | 010 Control Valves - D/S,Sizing,Tech Eval | 15d | 2005-11-03 A | 2006-01-20 A | EK010SY135, EK030IC210 FF | 100% | 2005-11-03 | 2005-11-23 |  | 2006-07-29 |  |  |  | 0 | 0 | 01 | EK | I22 | 010 | IC |  | IR | I |  | E |  | I2210 |  |  | X | E2B2 |  |  |  |  |  |
| EK010IC213 |  | 010 Control Valves - Purchase ERW | 5d | 2006-01-25 A | 2006-07-07 A | EK010IC210 | 100% | 2006-01-31 | 2006-02-06 |  | 2006-07-29 |  |  |  | 0 | 0 | 01 | EK | I22 | 010 | IC |  | IR | I | F | E |  | I2210 |  |  | N | E2B2 |  |  |  |  |  |
| EK010I1105 |  | 010 Orific Plates - Purchase ERW | 5d | 2006-01-30 A | 2006-04-11 A | EK010I1100 | 100% | 2006-01-30 | 2006-02-03 |  | 2006-07-29 |  |  |  | 0 | 0 | 01 | EK | I21 | 010 | IC |  | IR | I | F | E |  | I2110 |  |  | N | E2B2 |  |  |  |  |  |
| EK01AIC300 |  | 01A In Line Instrument Approved Vendor Data | 20d | 2006-02-01 A | 2006-06-19 A | EK010I1210, EK010I1240, EK010I1100, EK010IC242, EK010IC210, EK010I1150 | 100% | 2005-11-03 | 2005-11-30 |  | 2006-07-29 | 76 | 78 | 80 | 0 | 0 | 01 | EK | I00 | 01A | IC | X |  | I |  | E |  |  | 06 |  |  |  |  |  |  |  |  |
| EK01BIC300 |  | 01B In Line Instrument Approved Vendor Data | 20d | 2006-02-01 A | 2006-06-09 A | EK010I1210, EK010I1240, EK010I1100, EK010IC242, EK010IC210, EK010I1150 | 100% | 2005-11-03 | 2005-11-30 |  | 2006-07-29 | 45 | 50 | 55 | 0 | 2.7 | 01 | EK | I00 | 01B | IC | X |  | I |  | E |  |  | 06 |  |  |  |  |  |  |  |  |
| EK01CIC300 |  | 01C In Line Instrument Approved Vendor Data | 20d | 2006-02-01 A | 2006-06-09 A | EK010I1210, EK010I1240, EK010I1100, EK010IC242, EK010IC210, EK010I1150 | 100% | 2005-11-03 | 2005-11-30 |  | 2006-07-29 | 60 | 67 | 75 | 0 | 3.6 | 01 | EK | I00 | 01C | IC | X |  | I |  | E |  |  | 06 |  |  |  |  |  |  |  |  |
| EK01DIC300 |  | 01D In Line Instrument Approved Vendor Data | 20d | 2006-02-01 A | 2006-06-20 A | EK010I1210, EK010I1240, EK010I1100, EK010IC242, EK010IC210, EK010I1150 | 100% | 2005-11-03 | 2005-11-30 |  | 2006-07-29 | 90 | 100 | 105 | 0 | 0.2 | 01 | EK | I00 | 01D | IC | X |  | I |  | E |  |  | 06 |  |  |  |  |  |  |  |  |
| EK01JIC300 |  | 01J In Line Instrument Approved Vendor Data | 20d | 2006-02-01 A | 2006-05-15 A | EK010I1210, EK010I1240, EK010I1100, EK010IC242, EK010IC210, EK010I1150 | 100% | 2005-11-03 | 2005-11-30 |  | 2006-07-29 | 35 | 36 | 40 | 0 | 0 | 01 | EK | I00 | 01J | IC | X |  | I |  | E |  |  | 06 |  |  |  |  |  |  |  |  |
| EK01YIC300 |  | 01Y In Line Instrument Approved Vendor Data | 20d | 2006-02-01 A | 2006-06-06 A | EK010I1210, EK010I1240, EK010I1100, EK010IC242, EK010IC210, EK010I1150 | 100% | 2005-11-03 | 2005-11-30 |  | 2006-07-29 | 26 | 30 | 36 | 0 | 0 | 01 | EK | I00 | 01Y | IC | X |  | I |  | E | Need Systems Process Data PCV8750 |  | 06 |  |  |  |  |  |  |  |  |
| EK010I1241 |  | Rotameters - Purchase ERW | 5d | 2006-02-27 A | 2006-08-21 A | EK010I1240 | 100% | 2006-02-27 | 2006-03-03 |  | 2006-07-29 |  |  |  | 0 | 0 | 01 | EK | I21 | 010 | IC |  | IR | I | F | E | Finalizing requirements. | I2124 |  |  | N | E2B2 |  |  |  |  |  |
| EK010IC252 |  | MOV Valves - Purchase ERW | 5d | 2006-02-27 A | 2006-05-15 A | EK010IC242 | 100% | 2006-02-27 | 2006-03-03 |  | 2006-07-29 |  |  |  | 0 | 0 | 01 | EK | I22 | 010 | IC |  | IR | I | F | E |  | I2220 |  |  | N | E2B2 |  |  |  |  |  |
| EK01EIC120 |  | 01E Instrument Detail Model / Review | 15d | 2006-03-13 A | 2006-03-31 A | EM01EEL120 | 100% |  |  |  | 2006-07-29 |  |  |  | 0 | 0 | 01 | EK | ID1 | 01E | IC |  |  | I |  | E |  |  |  |  |  | E5B5 | 120 | 01E | IC120 | 7 | 7 |
| EK030I131A |  | Develop / Issue Purchase ERW -Transmitter OSBL | 37d | 2006-04-03 A | 2006-07-13 A | PK000I131K | 100% | 2006-04-03 | 2006-05-23 |  | 2006-07-29 |  |  |  | 0 | 0 | 01 | EK | I13 | 010 | IC |  |  | I | F | E |  | I1310 |  |  |  | E2B2 |  |  |  |  |  |
| EK010I1211 |  | Vortex Meters - Purchase ERW | 5d | 2006-04-10 A | 2006-06-02 A | EK010I1210 S1 | 100% | 2006-04-10 | 2006-04-14 |  | 2006-07-29 |  |  |  | 0 | 0 | 01 | EK | I21 | 010 | IC |  | IR | I | F | E |  | I2121 |  |  | N | E2B2 |  |  |  |  |  |
| EK030I616A |  | Develop / Issue Purchase ERW - Steam Drum Lvl Gauges - OSBL | 36d | 2006-04-21 A | 2006-06-12 A | PK000I616K, EK010SY090, EK030SY090, EK050SY090 | 100% | 2006-04-21 | 2006-06-09 |  | 2006-07-29 |  |  |  | 0 | 0 | 01 | EK | I16 | 010 | IC |  |  | I | F | E |  | I1616 |  |  |  | E2B2 |  |  |  |  |  |
| EK010I1151 |  | Annubars - Purchase ERW | 5d | 2006-05-01 A | 2006-06-20 A | EK010I1150 | 100% | 2006-05-01 | 2006-05-05 |  | 2006-07-29 |  |  |  | 0 | 0 | 01 | EK | I21 | 010 | IC |  | IR | I | F | E |  | I2115 |  |  | N | E2B2 |  |  |  |  |  |
| EK01YIC120 |  | 01Y Instrument Detail Model / Review | 20d | 2006-05-01 A | 2006-05-10 A | EM01YPI134 FF | 100% | 2006-05-01 | 2006-05-26 |  | 2006-07-29 |  |  |  | 0 | 0 | 01 | EK | ID1 | 01Y | IC |  |  | I |  | E |  |  |  |  |  | E5B5 | 120 | 01Y | IC120 | 17 | 10 |
| EK030I623A |  | Develop / Issue Purchase ERW -Multi-Point Thermocouples - OSBL | 36d | 2006-05-01 A | 2006-06-26 A | PK000I623K, EK010SY090, EK030SY090, EK050SY090 | 100% | 2006-05-01 | 2006-06-19 |  | 2006-07-29 |  |  |  | 0 | 0 | 01 | EK | I16 | 010 | IC |  |  | I | F | E |  | I1623 |  |  |  | E2B2 |  |  |  |  |  |
| EK030I621A |  | Develop / Issue Purchase ERW - Temperature Elements - OSBL | 36d | 2006-05-08 A | 2006-07-24 A | PK000I621K, EK010SY090, EK030SY090, EK050SY090 | 100% | 2006-05-08 | 2006-06-26 |  | 2006-07-29 | 30 | 36 | 40 | 0 | 2.1 | 01 | EK | I16 | 010 | IC |  |  | I | F | E |  | I1621 |  |  |  | E2B2 |  |  |  |  |  |
| EK030I611A |  | Develop / Issue Purchase ERW - Pressure Gauges - OSBL | 40d | 2006-05-22 A | 2006-08-09 A | EK010SY090, PK000I611K, EK030SY090, EK050SY090 | 100% | 2006-05-22 | 2006-07-14 |  | 2006-07-29 |  |  |  | 0 | 0 | 01 | EK | I16 | 010 | IC |  |  | I | F | E |  | I1611 |  |  |  | E2B2 |  |  |  |  |  |
| EK01CIC120 |  | 01C Instrument Detail Model / Review | 30d | 2006-06-19 A | 2006-11-14 A | EM01CPI134 FF | 100% | 2006-07-10 | 2006-08-18 |  | 2006-07-29 |  |  |  | 0 | 0 | 01 | EK | ID1 | 01C | IC |  |  | I |  | E |  |  |  |  |  | E5B5 | 120 | 01C | IC120 | 21 | 24 |
| EK01AIC120 |  | 01A Instrument Detail Model / Review | 50d | 2006-06-19 A | 2006-06-20 A | EM01API134 FF | 100% | 2006-06-19 | 2006-08-25 |  | 2006-07-29 |  |  |  | 0 | 0 | 01 | EK | ID1 | 01A | IC |  |  | I |  | E |  |  |  |  |  | E5B5 | 120 | 01A | IC120 | 30 | 27 |
| EK01BIC120 |  | 01B Instrument Detail Model / Review | 35d | 2006-06-19 A | 2006-07-20 A | EM01BPI134 FF | 100% | 2006-06-19 | 2006-08-04 |  | 2006-07-29 |  |  |  | 0 | 0 | 01 | EK | ID1 | 01B | IC |  |  | I |  | E |  |  |  |  |  | E5B5 | 120 | 01B | IC120 | 16 | 18 |
| EK01DIC120 |  | 01D Instrument Detail Model / Review | 40d | 2006-06-19 A | 2006-08-14 A | EM01DPI134 FF | 100% | 2006-06-19 | 2006-08-11 |  | 2006-07-29 |  |  |  | 0 | 0 | 01 | EK | ID1 | 01D | IC |  |  | I |  | E |  |  |  |  |  | E5B5 | 120 | 01D | IC120 | 10 | 31 |
| EK01JIC120 |  | 01J Instrument Detail Model / Review | 15d | 2006-07-03 A | 2006-07-20 A | EM01JPI134 FF | 100% | 2006-07-03 | 2006-07-21 |  | 2006-07-29 |  |  |  | 0 | 0 | 01 | EK | ID1 | 01J | IC |  |  | I |  | E |  |  |  |  |  | E5B5 | 120 | 01J | IC120 | 37 | 11 |
| EK01HIC120 |  | 01H Instrument Detail Model / Review | 25d | 2006-11-09 A | 2006-11-14 A | PK000E001M FF+5d, PK000E002M FF+5d, PK01HMJ135 FF+5d, PK000MJ73N FF+5d, PK000E004M FF+5d | 100% | 2006-11-09 | 2006-12-13 |  | 2006-07-29 |  |  |  | 0 | 0 | 01 | EK | ID1 | 01H | IC |  |  | I |  | E |  |  |  |  |  | E5B5 | 120 | 01H | IC120 | 22 | 39 |

| ID | WBS | Activity | Duration | Start | Finish | Predecessors | Complete | Remaining | Planned start | Planned finish | Total float | Free float | Expected finish | Calendar | zData Date | PCA Criticality Index | PCA Duration Sensitivity | EB02 - UNIT | EB01 - RESP | EB06 - WORK OP | EB03 - AREA | EB05 - DISCIPLINE | EB07 - REQN | EB08 - TAG | EB04 - CLASS | EB09 - IPMS | EB00 - EPC | Sequence | User Defined Field 1 | User Definer Field 2 | EB10 - KEY | EB15 - Civil / U/G Path of Construction | EB16 - Piping Path of Construction | EB17 - Suffix | user_text1 | Optimistic Duration | Most Likely Duration | Pessimistic Duration | user_integer1 | EB11 - FLAG | EB21 - Rev 2 Risk Associations |
| --- | --- | --- | --- | --- | --- | --- | --- | --- | --- | --- | --- | --- | --- | --- | --- | --- | --- | --- | --- | --- | --- | --- | --- | --- | --- | --- | --- | --- | --- | --- | --- | --- | --- | --- | --- | --- | --- | --- | --- | --- | --- |
|  | MB | **Furnaces & Flares Engineering** |  |  |  |  |  |  |  |  |  |  |  |  |  |  |  |  |  |  |  |  |  |  |  |  |  |  |  |  |  |  |  |  |  |  |  |  |  |  |  |
|  | MC | **Exchangers Engineering** |  |  |  |  |  |  |  |  |  |  |  |  |  |  |  |  |  |  |  |  |  |  |  |  |  |  |  |  |  |  |  |  |  |  |  |  |  |  |  |
|  | MD | **Vessels Engineering** |  | 2006-02-27 | 2006-06-30 |  |  |  |  |  |  |  |  |  |  |  |  |  |  |  |  |  |  |  |  |  |  |  |  |  |  |  |  |  |  |  |  |  |  |  |  |
| PK01BMF01 |  | 01B MF302 2001-FA/FB Water Tank - Fdn. V. Data (Subcontract) | 35d | 2006-02-27 A | 2006-03-24 A | EK000MF32F | 100% |  | 2006-02-27 | 2006-04-14 |  |  |  | EBWK - Global | 2006-07-29 | 0 | 0 | 01 | EK | MF3 | 01B | MD | MF302 | X | M | M | E |  |  |  |  |  |  |  |  |  |  |  |  |  |  |
| PK01BMF02 |  | 01B MF302 2001-FA/FB Water Tank - Prod. V. Data (Subcontract) | 35d | 2006-02-27 A | 2006-06-30 A | EK000MF32F | 100% |  | 2006-02-27 | 2006-04-14 |  |  |  | EBWK - Global | 2006-07-29 | 0 | 0 | 01 | EK | MF3 | 01B | MD | MF302 | X | M | M | E |  |  |  |  |  |  |  |  |  |  |  |  |  |  |
| PK01BMF03 |  | 01B MF302 2001-FA/FB Water Tank - Piping Prod. V. Data (Subcontract) | 35d | 2006-02-27 A | 2006-06-30 A | EK000MF32F | 100% |  | 2006-02-27 | 2006-04-14 |  |  |  | EBWK - Global | 2006-07-29 | 0 | 0 | 01 | EK | MF3 | 01B | MD | MF302 | X | M | M | E |  |  |  |  |  |  |  |  |  |  |  |  |  |  |
| PK01BMF04 |  | 01B MF302 2001-FA/FB Water Tank - Civil Prod. V. Data (Subcontract) | 35d | 2006-02-27 A | 2006-06-30 A | EK000MF32F | 100% |  | 2006-02-27 | 2006-04-14 |  |  |  | EBWK - Global | 2006-07-29 | 0 | 0 | 01 | EK | MF3 | 01B | MD | MF302 | X | M | M | E |  |  |  |  |  |  |  |  |  |  |  |  |  |  |
| PK01BMF05 |  | 01B MF302 2001-FA/FB Water Tank - E&I Prod. V. Data (Subcontract) | 35d | 2006-02-27 A | 2006-06-30 A | EK000MF32F | 100% |  | 2006-02-27 | 2006-04-14 |  |  |  | EBWK - Global | 2006-07-29 | 0 | 0 | 01 | EK | MF3 | 01B | MD | MF302 | X | M | M | E |  |  |  |  |  |  |  |  |  |  |  |  |  |  |
|  | MJ | **Machinery Engineering** |  | 2005-10-04 | 2007-01-29 |  |  |  |  |  |  |  |  |  |  |  |  |  |  |  |  |  |  |  |  |  |  |  |  |  |  |  |  |  |  |  |  |  |  |  |  |
| PK01DMUV04 |  | 01D MU611 2101-U - Piping Prod. V. Data | 35d | 2005-10-04 A | 2006-04-03 A | PK000MU61J | 100% |  | 2006-02-27 | 2006-04-14 |  |  |  | EBWK - Global | 2006-07-29 | 3 | 0 | 01 | EK | MU6 | 01D | MJ | MU611 | X | M | M | E |  |  |  |  |  |  |  |  |  |  |  |  |  |  |
| PK01DMUV05 |  | 01D MU611 2101-U - Civil Prod. V. Data | 35d | 2005-10-04 A | 2006-04-03 A | PK000MU61J | 100% |  | 2006-02-27 | 2006-04-14 |  |  |  | EBWK - Global | 2006-07-29 | 3 | 0 | 01 | EK | MU6 | 01D | MJ | MU611 | X | M | M | E |  |  |  |  |  |  |  |  |  |  |  |  |  |  |
| PK01DMUV06 |  | 01D MU611 2101-U - E&I Prod. V. Data | 35d | 2005-10-04 A | 2006-04-03 A | PK000MU61J | 100% |  | 2006-02-27 | 2006-04-14 |  |  |  | EBWK - Global | 2006-07-29 | 3 | 0 | 01 | EK | MU6 | 01D | MJ | MU611 | X | M | M | E |  |  |  |  |  |  |  |  |  |  |  |  |  |  |
| PK01BMJ154 |  | 01B Recv. Planning V. Data - Pumps (2001,4,7,2203,4) | 1d | 2005-10-28 A | 2005-10-28 A | PK000MJ36N, PK000MJ39N | 100% |  | 2006-01-05 | 2006-01-05 |  |  |  |  | 2006-07-29 | 0 | 0 | 01 | EK | MJ3 | 01B | MJ | P2030 |  | M | J | E | 154 | 01B | MJ154 | P15 | 16 | 18 | E2B2 |  |  |  |  |  |  |  |
| PK01HMJ135 |  | 01H Recv. Planning V.Data - Emerg Pwr Generator | 1d | 2005-10-31 A | 2005-10-31 A | PK000MJ73N | 100% |  |  |  |  |  |  |  | 2006-07-29 | 0 | 0 | 01 | EK | MJ7 | 01H | MJ | P2020 |  | M | J | E | 135 | 01H | MJ135 | P15 | 22 | 39 | E2B2 |  |  |  |  |  |  |  |
| PK01FMU100 |  | 01F Recv. Planning V. Data - Utility Equip. 2603-K, 2607-K | 5d | 2005-12-02 A | 2005-12-16 A | PK000MU21N, PK000MU22P | 100% |  | 2005-12-29 | 2006-01-05 |  |  |  |  | 2006-07-29 | 0 | 0 | 01 | EK | MU2 | 01F | MJ | P2030 |  | M | J | E | 100 | 01F | MU100 | P15 | 5 | 5 | E2B2 |  |  |  |  |  |  |  |
| PK01DMJ154 |  | 01D Recv. Planning V. Data - Pumps 2210-J | 1d | 2006-01-26 A | 2006-01-26 A | PK000MJ33N | 100% |  | 2006-01-30 | 2006-01-30 |  |  |  |  | 2006-07-29 | 0 | 0 | 01 | EK | MJ3 | 01D | MJ | P2030 |  | M | J | E | 154 | 01D | MJ154 | P15 | 10 | 31 | E2B2 |  |  |  |  |  |  |  |
| PK01BMJV01 |  | 01B MJ305 2001-JA/JB/JC, 2004-J/JA,2007-J/JA,2007-J/JA - Piping Prod. V. Data | 35d | 2006-01-30 A | 2006-05-01 A | PK000MJ36J, PK000MJ35N | 100% |  | 2006-01-30 | 2006-03-17 |  |  |  | EBWK - Global | 2006-07-29 | 0 | 0 | 01 | EK | MJ3 | 01B | MJ | MJ305 | X | M | M | E |  |  |  |  |  |  |  |  |  |  |  |  |  |  |
| PK01BMJV02 |  | 01B MJ305 2001-JA/JB/JC, 2004-J/JA,2007-J/JA,2007-J/JA - Civil Prod. V. Data | 35d | 2006-01-30 A | 2006-04-21 A | PK000MJ36J, PK000MJ35N | 100% |  | 2006-01-30 | 2006-03-17 |  |  |  | EBWK - Global | 2006-07-29 | 0 | 0 | 01 | EK | MJ3 | 01B | MJ | MJ305 | X | M | M | E |  |  |  |  |  |  |  |  |  |  |  |  |  |  |
| PK01BMJV03 |  | 01B MJ305 2001-JA/JB/JC, 2004-J/JA,2007-J/JA,2007-J/JA - E&I Prod. V. Data | 35d | 2006-01-30 A | 2006-06-07 A | PK000MJ36J, PK000MJ35N | 100% |  | 2006-01-30 | 2006-03-17 |  |  |  | EBWK - Global | 2006-07-29 | 0 | 0 | 01 | EK | MJ3 | 01B | MJ | MJ305 | X | M | M | E |  |  |  |  |  |  |  |  |  |  |  |  |  |  |
| PK01EMUV01 |  | 01E MU221 Warehouse / Maintenance Area - Piping Prod. V. Data | 35d | 2006-01-30 A | 2006-01-30 A | PK000MU21J | 100% |  | 2006-01-30 | 2006-03-17 |  |  |  | EBWK - Global | 2006-07-29 | 0 | 0 | 01 | EK | MU2 | 01E | MJ | MU221 | X | M | M | E |  |  |  |  |  |  |  |  |  |  |  |  |  |  |
| PK01EMUV02 |  | 01E MU221 Warehouse / Maintenance Area - Civil Prod. V. Data | 35d | 2006-01-30 A | 2006-01-30 A | PK000MU21J, PK01EMUV01 FF | 100% |  | 2006-01-30 | 2006-03-17 |  |  |  | EBWK - Global | 2006-07-29 | 0 | 0 | 01 | EK | MU2 | 01E | MJ | MU221 | X | M | M | E |  |  |  |  |  |  |  |  |  |  |  |  |  |  |
| PK01EMUV03 |  | 01E MU221 Warehouse / Maintenance Area - E&I Prod. V. Data | 35d | 2006-01-30 A | 2006-01-30 A | PK000MU21J, PK01EMUV02 FF | 100% |  | 2006-01-30 | 2006-03-17 |  |  |  | EBWK - Global | 2006-07-29 | 0 | 0 | 01 | EK | MU2 | 01E | MJ | MU221 | X | M | M | E |  |  |  |  |  |  |  |  |  |  |  |  |  |  |
| PK01HMJV01 |  | 01H MJ730 2303-J - Civil Prod. V. Data | 35d | 2006-01-30 A | 2006-08-14 A | PK000MJ73J | 100% |  | 2006-01-30 | 2006-03-17 |  |  |  | EBWK - Global | 2006-07-29 | 0 | 0 | 01 | EK | MJ7 | 01H | MJ | MJ730 | X | M | M | E |  |  |  |  |  |  |  | Dynamic Loading Needed. Maybe Wen does not need. |  |  |  |  |  |  |
| PK01HMJV02 |  | 01H MJ730 2303-J - E&I Prod. V. Data | 35d | 2006-01-30 A | 2007-01-29 | PK000MJ73J | 100% | 0d | 2006-01-30 | 2006-03-17 | 511d | 0d | 2006-11-10 | EBWK - Global | 2006-07-29 | 0 | 0 | 01 | EK | MJ7 | 01H | MJ | MJ730 | X | M | M | E |  |  |  |  |  |  |  | In Tech Review |  |  |  |  |  |  |
| PK01DMJV01 |  | 01D MJ303 2202-JA/JB/JC - Civil Prod. V. Data | 35d | 2006-02-03 A | 2006-04-06 A | PK000MJ33J | 100% |  | 2006-01-30 | 2006-03-17 |  |  |  | EBWK - Global | 2006-07-29 | 0 | 0 | 01 | EK | MJ3 | 01D | MJ | MJ303 | X | M | M | E |  |  |  |  |  |  |  |  | 50 | 60 | 90 | 14 | CD | 06 |
| PK01DMJV02 |  | 01D MJ303 2202-JA/JB/JC - Piping Prod. V. Data | 35d | 2006-02-03 A | 2006-04-06 A | PK000MJ33J | 100% |  | 2006-01-30 | 2006-03-17 |  |  |  | EBWK - Global | 2006-07-29 | 0 | 0 | 01 | EK | MJ3 | 01D | MJ | MJ303 | X | M | M | E |  |  |  |  |  |  |  |  | 50 | 60 | 90 | 14 | CD | 06 |
| PK01DMJV03 |  | 01D MJ303 2202-JA/JB/JC - E&I Prod. V. Data | 35d | 2006-02-03 A | 2006-07-18 A | PK000MJ33J | 100% |  | 2006-02-03 | 2006-03-23 |  |  |  | EBWK - Global | 2006-07-29 | 0 | 0 | 01 | EK | MJ3 | 01D | MJ | MJ303 | X | M | M | E |  |  |  |  |  |  |  |  | 50 | 60 | 90 | 14 | CD | 06 |
| PK01BMU100 |  | 01B Recv. Planning V. Data - 2007-L (No Req.) | 1d | 2006-02-10 A | 2006-02-10 A | PK000MU30N | 100% |  | 2006-02-27 | 2006-02-27 |  |  |  |  | 2006-07-29 | 0 | 0 | 01 | EK | ML3 | 01B | MJ | P2030 |  | M | J | E | 100 | 01B | MU100 | P15 | 16 | 18 | E2B2 |  |  |  |  |  |  |  |
| PK01DMUV01 |  | 01D MU310 2202-L,2203-L,2203-L,2205-L,2208-L,2212-L-Piping Prod. V. Data | 35d | 2006-02-14 A | 2006-06-26 A | PK000MU31J | 100% |  | 2006-03-27 | 2006-05-12 |  |  |  | EBWK - Global | 2006-07-29 | 3 | 0 | 01 | EK | MU3 | 01D | MJ | MU310 | X | M | M | E |  |  |  |  |  |  |  |  | 30 | 35 | 40 |  |  |  |
| PK01DMUV02 |  | 01D MU310 2202-L,2203-L,2203-L,2205-L,2208-L - Civil Prod. V. Data | 35d | 2006-02-14 A | 2006-05-01 A | PK000MU31J | 100% |  | 2006-03-27 | 2006-05-12 |  |  |  | EBWK - Global | 2006-07-29 | 3 | 0 | 01 | EK | MU3 | 01D | MJ | MU310 | X | M | M | E |  |  |  |  |  |  |  |  | 30 | 35 | 40 |  |  |  |
| PK01DMUV03 |  | 01D MU310 2202-L,2203-L,2203-L,2205-L,2208-L,2212-L- E&I Prod. V. Data | 35d | 2006-02-14 A | 2006-06-26 A | PK000MU31J | 100% |  | 2006-03-27 | 2006-05-12 |  |  |  | EBWK - Global | 2006-07-29 | 3 | 0 | 01 | EK | MU3 | 01D | MJ | MU310 | X | M | M | E |  |  |  |  |  |  |  |  | 30 | 35 | 40 |  |  |  |
| PK01CMUV01 |  | 01C MU300 2102-U - Piping Prod. V. Data | 35d | 2006-02-16 A | 2006-09-05 A | PK000MU30J, PK000MU30N | 100% |  | 2006-01-30 | 2006-03-17 |  |  |  | EBWK - Global | 2006-07-29 | 0 | 1.8 | 01 | EK | MU3 | 01C | MJ | MU300 | X | M | M | E |  |  |  |  |  |  |  |  | 70 | 80 | 120 |  |  | 06 |
| PK01CMUV02 |  | 01C MU300 2102-U - Civil Prod. V. Data | 35d | 2006-02-16 A | 2006-09-25 A | PK000MU30J, PK000MU30N | 100% |  | 2006-01-30 | 2006-03-17 |  |  |  | EBWK - Global | 2006-07-29 | 0 | 1.8 | 01 | EK | MU3 | 01C | MJ | MU300 | X | M | M | E |  |  |  |  |  |  |  |  | 70 | 80 | 120 |  |  | 06 |
| PK01CMUV03 |  | 01C MU300 2102-U - E&I Prod. V. Data | 35d | 2006-02-16 A | 2006-08-15 A | PK000MU30J, PK000MU30N | 100% |  | 2006-01-30 | 2006-03-17 |  |  |  | EBWK - Global | 2006-07-29 | 0 | 1.8 | 01 | EK | MU3 | 01C | MJ | MU300 | X | M | M | E |  |  |  |  |  |  |  |  | 70 | 80 | 120 |  |  | 06 |
| PK01BMJV04 |  | 01B MJ391 2204-J/JA - Piping Prod. V. Data | 35d | 2006-04-17 A | 2006-06-09 A | PK000MJ39J, PK000MJ39N | 100% |  | 2006-04-17 | 2006-06-02 |  |  |  | EBWK - Global | 2006-07-29 | 0 | 0 | 01 | EK | MJ3 | 01B | MJ | MJ391 | X | M | M | E |  |  |  |  |  |  |  | Diesel Tank | 40 | 40 | 50 |  |  | 06 |
| PK01BMJV05 |  | 01B MJ391 2204-J/JA - Civil Prod. V. Data | 35d | 2006-04-17 A | 2006-06-09 A | PK000MJ39J, PK000MJ39N | 100% |  | 2006-04-17 | 2006-06-02 |  |  |  | EBWK - Global | 2006-07-29 | 0 | 0 | 01 | EK | MJ3 | 01B | MJ | MJ391 | X | M | M | E |  |  |  |  |  |  |  | Diesel Tank | 40 | 40 | 50 |  |  | 06 |
| PK01BMJV06 |  | 01B MJ391 2204-J/JA - E&I Prod. V. Data | 35d | 2006-04-17 A | 2006-10-06 A | PK000MJ39J, PK000MJ39N | 100% |  | 2006-04-17 | 2006-06-02 |  |  |  | EBWK - Global | 2006-07-29 | 0 | 0 | 01 | EK | MJ3 | 01B | MJ | MJ391 | X | M | M | E |  |  |  |  |  |  |  |  | 40 | 40 | 50 |  |  | 06 |
| PK01DMUV07 |  | 01D MU322 2210-L,2211-L - Piping Prod. V. Data | 35d | 2006-05-01 A | 2006-06-20 A | PK000MU32J | 100% |  | 2006-05-09 | 2006-06-26 |  |  |  | EBWK - Global | 2006-07-29 | 3 | 0 | 01 | EK | MU3 | 01D | MJ | MU322 | X | M | M | E |  |  |  |  |  |  |  |  | 30 | 35 | 40 |  |  | 06 |
| PK01DMUV08 |  | 01D MU322 2210-L,2211-L - Civil Prod. V. Data | 35d | 2006-05-01 A | 2006-05-02 A | PK000MU32J | 100% |  | 2006-05-09 | 2006-06-26 |  |  |  | EBWK - Global | 2006-07-29 | 3 | 0 | 01 | EK | MU3 | 01D | MJ | MU322 | X | M | M | E |  |  |  |  |  |  |  |  | 30 | 35 | 40 |  |  | 06 |
| PK01DMUV09 |  | 01D MU322 2210-L,2211-L - E&I Prod. V. Data | 35d | 2006-05-01 A | 2006-06-26 A | PK000MU32J | 100% |  | 2006-05-09 | 2006-06-26 |  |  |  | EBWK - Global | 2006-07-29 | 3 | 0 | 01 | EK | MU3 | 01D | MJ | MU322 | X | M | M | E |  |  |  |  |  |  |  |  | 30 | 35 | 40 |  |  | 06 |
| PK01AMLV01 |  | 01A ML900 2408-LA,LB,LC,LD - Piping Prod. V. Data | 35d | 2006-05-03 A | 2006-06-01 A | PK000ML90J | 100% |  | 2006-05-01 | 2006-06-16 |  |  |  | EBWK - Global | 2006-07-29 | 0 | 0 | 01 | EK | ML9 | 01A | MJ | ML900 | X | M | M | E |  |  |  |  |  |  |  |  |  |  |  |  |  |  |
| PK01AMLV02 |  | 01A ML900 2408-LA,LB,LC,LD - Civil Prod. V. Data | 35d | 2006-05-03 A | 2006-06-01 A | PK000ML90J | 100% |  | 2006-05-01 | 2006-06-16 |  |  |  | EBWK - Global | 2006-07-29 | 0 | 0 | 01 | EK | ML9 | 01A | MJ | ML900 | X | M | M | E |  |  |  |  |  |  |  |  |  |  |  |  |  |  |
| PK01AMLV03 |  | 01A ML900 2408-LA,LB,LC,LD - E&I Prod. V. Data | 35d | 2006-05-03 A | 2006-09-11 A | PK000ML90J | 100% |  | 2006-05-01 | 2006-06-16 |  |  |  | EBWK - Global | 2006-07-29 | 0 | 0 | 01 | EK | ML9 | 01A | MJ | ML900 | X | M | M | E |  |  |  |  |  |  |  |  |  |  |  |  |  |  |
| PK01AMJV01 |  | 01A MJ308 2408-JA/JB - Piping Prod. V. Data | 40d | 2006-05-24 A | 2006-07-25 A | PK000MJ38M | 100% |  | 2006-05-22 | 2006-07-14 |  |  |  | EBWK - Global | 2006-07-29 | 4.1 | 2.4 | 01 | EK | MJ3 | 01A | MJ | MJ308 | X | M | M | E |  |  |  |  |  |  |  | Driving Model Development | 40 | 45 | 75 | 40 | CD | 06 |
| PK01AMJV02 |  | 01A MJ308 2408-JA/JB - Civil Prod. V. Data | 40d | 2006-05-24 A | 2006-08-14 A | PK000MJ38M | 100% |  | 2006-05-22 | 2006-07-14 |  |  |  | EBWK - Global | 2006-07-29 | 4.1 | 2.4 | 01 | EK | MJ3 | 01A | MJ | MJ308 | X | M | M | E |  |  |  |  |  |  |  | Waiting for weights. | 40 | 45 | 75 | 40 | CD | 06 |
| PK01AMJV03 |  | 01A MJ308 2408-JA/JB - E&I Prod. V. Data | 40d | 2006-05-24 A | 2006-08-14 A | PK000MJ38M | 100% |  | 2006-05-22 | 2006-07-14 |  |  |  | EBWK - Global | 2006-07-29 | 4.1 | 2.4 | 01 | EK | MJ3 | 01A | MJ | MJ308 | X | M | M | E |  |  |  |  |  |  |  |  | 40 | 45 | 75 | 40 | CD | 06 |

| ID | WBS | Activity | Duration | Start | Finish | Predecessors | Complete | Planned start | Planned finish | Calendar | zData Date | PCA Criticality Index | PCA Duration Sensitivity | EB02 - UNIT | EB01 - RESP | EB06 - WORK OP | EB03 - AREA | EB05 - DISCIPLINE | EB10 - KEY | EB04 - CLASS | EB11 - FLAG | EB00 - EPC | EB17 - Suffix | user_integer2 | user_text2 | EB12 - TEMP | EB15 - Civil / U/G Path of Construction | EB16 - Piping Path of Construction | EB19 - System | Sequence | User Defined Field 1 | User Definer Field 2 | user_text1 | Optimistic Duration | Most Likely Duration | Pessimistic Duration | user_integer1 |
| --- | --- | --- | --- | --- | --- | --- | --- | --- | --- | --- | --- | --- | --- | --- | --- | --- | --- | --- | --- | --- | --- | --- | --- | --- | --- | --- | --- | --- | --- | --- | --- | --- | --- | --- | --- | --- | --- |
|  | PI | **Piping Engineering** |  | 2005-04-01 | 2006-12-08 |  |  |  |  |  |  |  |  |  |  |  |  |  |  |  |  |  |  |  |  |  |  |  |  |  |  |  |  |  |  |  |  |
| EK010PI005 |  | Develop Plot Plan & ID Areas - Overall Site IFI | 10d | 2005-04-01 A | 2005-04-08 A | EK020PI010 | 100% | 2005-04-01 | 2005-04-14 |  | 2006-07-29 | 0 | 0 | 01 | EK | P10 | 010 | PI | P17 | P | X | E | E2B2 |  |  |  |  |  |  |  |  |  |  |  |  |  |  |
| EK010PI010 |  | Develop Plot Plan & ID Areas - Overall Site (Drwg 0101) ICA | 20d | 2005-04-22 A | 2005-09-30 A | EK020PI010, EK010PI005 | 100% | 2005-04-22 | 2005-05-19 |  | 2006-07-29 | 0 | 0 | 01 | EK | P10 | 010 | PI | P17 | P | X | E | E2B2 |  |  |  |  |  |  |  |  |  |  |  |  |  |  |
| EK01UPICWA |  | 01U Plant Layout Model - Cooling Water | 16d | 2005-08-20 A | 2005-09-23 A | EK010SY050 | 100% | 2005-08-15 | 2005-09-05 |  | 2006-07-29 | 0 | 0 | 01 | EK | U20 | 01U | PI | P02 | U |  | E | E2B2 | 16 | EK02UPICBA | X | 1 | 1 | CW |  |  |  |  |  |  |  |  |
| EK01BPI000 |  | 01B Preliminary Drawings for Supersketch J-2001,2003,2004,2007 | 1d | 2005-08-29 A | 2005-08-29 A | EK010PI010 SS+10d | 100% |  |  |  | 2006-07-29 | 0 | 0 | 01 | EK | P20 | 01B | PI | P00 | P | X | E | E2B2 |  |  |  | 16 | 18 |  | 030 | 01B | PI030 |  |  |  |  |  |
| EK01DPI000 |  | 01D Preliminary Drawings for Supersketch J-2202 | 1d | 2005-08-29 A | 2005-08-29 A | EK010PI010 SS | 100% |  |  |  | 2006-07-29 | 0 | 0 | 01 | EK | P20 | 01D | PI | P00 | P | X | E | E2B2 |  |  |  | 10 | 31 |  | 030 | 01B | PI030 |  |  |  |  |  |
| EK01DPI030 |  | 01D Conceptual Layout - Supersketches | 11d | 2005-08-31 A | 2005-09-14 A | EK010PI010 SS+30d, EK010SY030, EK01DPI000 FF+4d | 100% |  |  |  | 2006-07-29 | 0 | 0 | 01 | EK | P20 | 01D | PI | P01 | P | X | E | E2B2 |  |  |  | 10 | 31 |  | 030 | 01D | PI030 |  |  |  |  |  |
| EK01BPI030 |  | 01B Conceptual Layout - Supersketches | 11d | 2005-09-15 A | 2005-09-30 A | EK010SY030, EK010PI010 SS+10d, EK01BPI000 FF+4d | 100% | 2005-09-05 | 2005-09-19 |  | 2006-07-29 | 0 | 0 | 01 | EK | P20 | 01B | PI | P01 | P | X | E | E2B2 |  |  |  | 16 | 18 |  | 030 | 01B | PI030 |  |  |  |  |  |
| EK01UPIFWA |  | 01U Plant Layout Model - Firewater | 16d | 2005-09-22 A | 2005-11-07 A | EK010SY050 | 100% | 2005-08-15 | 2005-09-05 |  | 2006-07-29 | 0 | 0 | 01 | EK | U20 | 01U | PI | P02 | U |  | E | E2B2 | 16 | EK02UPICBA | X | 1 | 1 | FW |  |  |  |  |  |  |  |  |
| EK01PIBSA |  | 01U Plant Layout Model - Benfield Sewer | 16d | 2005-09-26 A | 2005-11-04 A | EK020SY020 | 100% | 2005-08-15 | 2005-09-05 |  | 2006-07-29 | 0 | 0 | 01 | EK | U20 | 01U | PI | P02 | U |  | E | E1B1 | 16 | EK02UPICBA | X | 1 | 1 | CB |  |  |  |  |  |  |  |  |
| EK01UPISSA |  | 01U Plant Layout Model - Sanitary Sewer | 16d | 2005-09-26 A | 2005-11-04 A | EK030SY050 | 100% | 2005-08-15 | 2005-09-05 |  | 2006-07-29 | 0 | 0 | 01 | EK | U20 | 01U | PI | P02 | U |  | E | E2B2 | 16 | EK02UPICBA | X | 1 | 1 | SS |  |  |  |  |  |  |  |  |
| EK010PI011 |  | Plot Plan - Overall Site (Drwg 0101) Client ICA Approval | 10d | 2005-10-03 A | 2005-10-14 A | EK020PI011, EK010PI010 | 100% | 2005-09-26 | 2005-10-07 |  | 2006-07-29 | 0 | 0 | 01 | EK | P10 | 010 | PI | P17 | P | X | E | E2B2 |  |  |  |  |  |  |  |  |  |  |  |  |  |  |
| EK01JPI030 |  | 01J Conceptual Layout - Supersketches | 7d | 2005-10-26 A | 2005-11-03 A | EK010SY030, EK010PI010 SS | 100% | 2005-11-21 | 2005-11-29 |  | 2006-07-29 | 0 | 0 | 01 | EK | P20 | 01J | PI | P01 | P | X | E | E2B2 |  |  |  | 37 | 11 |  | 030 | 01J | PI030 |  |  |  |  |  |
| EK01UPIPWA |  | 01U Plant Layout Model - Potable Water | 16d | 2005-10-27 A | 2005-11-04 A | EK030SY050 | 100% | 2005-08-15 | 2005-09-05 |  | 2006-07-29 | 0 | 0 | 01 | EK | U20 | 01U | PI | P02 | U |  | E | E2B2 | 16 | EK02UPICBA | X | 1 | 1 | PW |  |  |  |  |  |  |  |  |
| EK01UPIPAA |  | 01U Plant Layout Model - Plant Air | 16d | 2005-10-31 A | 2005-10-31 A | EK010SY050 | 100% | 2005-08-15 | 2005-09-05 |  | 2006-07-29 | 0 | 0 | 01 | EK | U20 | 01U | PI | P02 | U |  | E | E2B2 | 16 | EK02UPICBA | X | 1 | 1 | PA |  |  |  |  |  |  |  |  |
| EK01UPIWWA |  | 01U Plant Layout Model - Waste Water | 5d | 2005-10-31 A | 2005-11-04 A | EK010SY050 | 100% | 2005-10-17 | 2005-10-21 |  | 2006-07-29 | 0 | 0 | 01 | EK | U20 | 01U | PI | P02 | U |  | E | E2B2 | 16 | EK02UPICBA | X | 1 | 1 | WW |  |  |  |  |  |  |  |  |
| EK01API030 |  | 01A Conceptual Layout - Supersketches | 3d | 2005-11-01 A | 2005-11-07 A | EK010SY030, EK010PI010 SS+5d, EK000EV010 | 100% | 2005-11-16 | 2005-11-18 |  | 2006-07-29 | 0 | 0 | 01 | EK | P20 | 01A | PI | P01 | P | X | E | E2B2 |  |  |  | 30 | 27 |  | 030 | 01A | PI030 |  |  |  |  |  |
| EK010PI012 |  | Plot Plan - Overall Site (Drwg 0101) Issue IPL | 30d | 2005-12-29 A | 2006-01-20 A | EK010PI011 | 100% | 2006-01-23 | 2006-03-03 |  | 2006-07-29 | 0 | 0 | 01 | EK | P10 | 010 | PI | P17 | P | X | E | E2B2 |  |  |  |  |  |  |  |  |  |  |  |  |  |  |
| EK010PI013 |  | Plot Plan - Overall Site (Drwg 0101) Issue IPL | 40d | 2006-01-23 A | 2006-02-23 A | EK010PI012 | 100% | 2006-04-13 | 2006-06-07 |  | 2006-07-29 | 0 | 0 | 01 | EK | P10 | 010 | PI | P17 | P |  | E | E2B2 |  |  |  |  |  |  |  |  |  |  |  |  |  |  |
| EK010PI014 |  | Plot Plan - Overall Site (Drwg 0101) Issue IFC | 45d | 2006-02-27 A | 2006-04-28 A | EK010PI013 | 100% |  |  |  | 2006-07-29 | 0 | 0 | 01 | EK | P10 | 000 | PI | P17 | P |  | E | E2B2 |  |  |  |  |  |  |  |  |  | SPDC Info Needed, Will issue with Holds. |  |  |  |  |
| EK01YPI050 |  | 01Y Model Comment Resolution Approval | 3d | 2006-03-01 A | 2006-03-03 A | EM01YPI120, EM01YPI133 | 100% | 2006-03-15 | 2006-03-17 |  | 2006-07-29 | 0 | 0 | 01 | EK | P50 | 01Y | PI | P06 | P |  | E | E2B2 |  |  |  | 17 | 10 |  | 050 | 01Y | PI050 |  |  |  |  |  |
| EK01DPI021 |  | 01D Model Review Comment Resolution | 3d | 2006-03-06 A | 2006-03-10 A | EM01DPI130 | 100% | 2006-03-13 | 2006-03-15 |  | 2006-07-29 | 0 | 0 | 01 | EK | P50 | 01D | PI | P04 | P |  | E |  |  |  |  |  |  |  |  |  |  |  |  |  |  |  |
| EK01BPI050 |  | 01B Model Comment Resolution Approval | 5d | 2006-03-13 A | 2006-03-17 A | EM01BPI133 | 100% | 2006-03-20 | 2006-03-24 |  | 2006-07-29 | 0 | 0 | 01 | EK | P50 | 01B | PI | P06 | P |  | E | E2B2 |  |  |  | 16 | 18 |  | 050 | 01B | PI050 |  |  |  |  |  |
| EK01DPI050 |  | 01D Model Comment Resolution Approval | 3d | 2006-03-15 A | 2006-03-15 A | EM01DPI133 | 100% | 2006-03-20 | 2006-03-22 |  | 2006-07-29 | 0 | 0 | 01 | EK | P50 | 01D | PI | P06 | P |  | E | E2B2 |  |  |  | 10 | 31 |  | 050 | 01D | PI050 |  |  |  |  |  |
| EK01API050 |  | 01A Model Comment Resolution Approval | 3d | 2006-05-09 A | 2006-05-18 A | EM01API133 | 100% | 2006-05-01 | 2006-05-03 |  | 2006-07-29 | 0 | 0 | 01 | EK | P50 | 01A | PI | P06 | P |  | E | E2B2 |  |  |  | 30 | 27 |  | 050 | 01A | PI050 |  |  |  |  |  |
| EK01YPI143 |  | 01Y OP's & Serv. Model Comment Resolution Approval | 5d | 2006-06-13 A | 2006-06-22 A | EM01YPI136 | 100% | 2006-06-13 | 2006-06-19 | EBWK 5 Day MEC Holidays | 2006-07-29 | 0 | 0 | 01 | EK | P20 | 01Y | PI | P12 | P |  | E | E5B5 |  |  |  | 17 | 10 |  | 130 | 01Y | PI130 |  |  |  |  |  |
| EK01JPI050 |  | 01J Model Comment Resolution Approval | 5d | 2006-07-04 A | 2006-07-06 A | EM01JPI120, EM01JPI133 | 100% | 2006-07-04 | 2006-07-10 |  | 2006-07-29 | 0 | 0 | 01 | EK | P50 | 01J | PI | P06 | P |  | E | E2B2 |  |  |  | 37 | 11 |  | 050 | 01J | PI050 |  |  |  |  |  |
| EK01JPI143 |  | 01J Op's & Serv. Model Comment Resolution Approval | 5d | 2006-07-26 A | 2006-08-22 A | EM01JPI136 | 100% | 2006-07-26 | 2006-08-01 | EBWK 5 Day MEC Holidays | 2006-07-29 | 0 | 0 | 01 | EK | P20 | 01J | PI | P12 | P |  | E | E5B5 |  |  |  | 37 | 11 |  | 130 | 01J | PI130 |  |  |  |  |  |
| EK01BPI144 |  | 01B OP's & Serv. Model Comments Resolution Approval | 2d | 2006-08-24 A | 2006-09-25 A | EM01BPI136 FF | 100% | 2006-08-24 | 2006-08-25 | EBWK 5 Day MEC Holidays | 2006-07-29 | 0 | 0 | 01 | EK | P20 | 01B | PI | P12 | P |  | E | E5B5 |  |  |  | 30 | 27 |  | 134 | 01A | PI134 | MEC 2nd Round |  |  |  |  |
| EK01API144 |  | 01A OP's & Serv. Model Comments Resolution Approval | 2d | 2006-08-31 A | 2006-09-01 A | EM01API136 FF | 100% | 2006-08-28 | 2006-08-29 | EBWK 5 Day MEC Holidays | 2006-07-29 | 0 | 0 | 01 | EK | P20 | 01A | PI | P12 | P |  | E | E5B5 |  |  |  | 30 | 27 |  | 134 | 01A | PI134 |  |  |  |  |  |
| EK01DPI144 |  | 01D OP's & Serv. Model Comments Resolution Approval | 2d | 2006-09-25 A | 2006-12-08 A | EM01DPI136 FF | 100% | 2006-09-25 | 2006-09-26 | EBWK 5 Day MEC Holidays | 2006-07-29 | 0 | 0 | 01 | EK | P20 | 01D | PI | P12 | P |  | E | E5B5 |  |  |  | 30 | 27 |  | 134 | 01A | PI134 |  | 1 | 2 | 5 | 70 |
| EK01CPI143 |  | 01C OP's & Serv. Model Comment Resolution Approval | 5d | 2006-12-08 A | 2006-12-08 A | EM01CPI136 SS | 100% | 2006-12-08 | 2006-12-15 | EBWK 5 Day MEC Holidays | 2006-07-29 | 0 | 0 | 01 | EK | P20 | 01C | PI | P12 | P |  | E | E5B5 |  |  |  | 21 | 24 |  | 130 | 01C | PI130 |  |  |  |  |  |

Notes:
- EK010PI005: P3 Activity Log Info: IFI Planned for 08 April 05 / Needs Roads. Basin, etc. for ICA issue / ADD ICA ISSUE

| ID | WBS | Activity | Type | Duration | Start | Finish | Predecessors | Complete | Planned start | Planned finish | zData Date | PCA Criticality Index | PCA Duration Sensitivity | EB02 - UNIT | EB01 - RESP | EB06 - WORK OP | EB03 - AREA | EB05 - DISCIPLINE | EB04 - CLASS | EB11 - FLAG | EB00 - EPC | EB17 - Suffix | EB10 - KEY | EB07 - REQN | EB09 - IPMS | Sequence | User Defined Field 1 | User Definer Field 2 | EB15 - Civil / U/G Path of Construction | EB16 - Piping Path of Construction |
| --- | --- | --- | --- | --- | --- | --- | --- | --- | --- | --- | --- | --- | --- | --- | --- | --- | --- | --- | --- | --- | --- | --- | --- | --- | --- | --- | --- | --- | --- | --- |
|  | PR | **Process Engineering** |  |  |  |  |  |  |  |  |  |  |  |  |  |  |  |  |  |  |  |  |  |  |  |  |  |  |  |  |
|  | SE | **Safety Engineering** |  |  | 2005-05-06 | 2006-09-27 |  |  |  |  |  |  |  |  |  |  |  |  |  |  |  |  |  |  |  |  |  |  |  |  |
| EK010FP011 |  | FP Firewater Pump P&IDs - Development & Issue ICA |  | 53d | 2005-05-06 A | 2005-07-19 A | EK000FP050 FF, EK010SY040 FF | 100% | 2005-05-06 | 2005-07-22 | 2006-07-29 | 0 | 0 | 01 | EK | YP0 | 010 | FP | Y | X | E | E2B2 |  |  |  |  |  |  |  |  |
| EK010FP050 |  | FP Deluge P&IDs - Development & Issue ICA |  | 53d | 2005-05-06 A | 2005-07-19 A | EK010FP011 FF | 100% | 2005-05-06 | 2005-07-22 | 2006-07-29 | 0 | 0 | 01 | EK | YP0 | 010 | FP | Y | X | E | E2B2 |  |  |  |  |  |  |  |  |
| EK010FP020 |  | FP Firewater Pump P&IDs - Development & Issue IPL |  | 70d | 2005-07-20 A | 2005-12-01 A | EK010FP011, EK000FP055 FF | 100% | 2005-08-22 | 2005-11-25 | 2006-07-29 | 0 | 0 | 01 | EK | YP0 | 010 | FP | Y | X | E | E2B2 |  |  |  |  |  |  |  |  |
| EK010FP060 |  | FP Deluge P&IDs - Development & Issue IPL |  | 70d | 2005-07-20 A | 2005-12-01 A | EK010FP050, EK010FP020 FF | 100% | 2005-08-22 | 2005-11-25 | 2006-07-29 | 0 | 0 | 01 | EK | YP0 | 010 | FP | Y | X | E | E2B2 |  |  |  |  |  |  |  |  |
| EK020FP490 |  | FP OSBL Fire Protection Eqmt. Location Plans - ICA |  | 5d | 2005-09-01 A | 2005-10-03 A | EK010PI010 | 100% | 2005-10-17 | 2005-10-24 | 2006-07-29 | 0 | 0 | 01 | EK | ZF1 | 010 | FP | Z | X | E | E2B2 |  |  |  |  |  |  |  |  |
| EK000FP012 |  | FP Electrical Area Classification OSBL - ICA |  | 5d | 2005-10-17 A | 2005-11-10 A | EK010PI010 | 100% | 2005-10-17 | 2005-10-24 | 2006-07-29 | 0 | 0 | 01 | EK | ZE0 | 010 | FP | Z | X | E | E2B2 |  |  |  |  |  |  |  |  |
| EK010FP031 |  | FP Firewater Pump P&IDs - Development & Issue IFD |  | 65d | 2005-12-02 A | 2006-07-26 A | EK010FP020, EM01ASY172 FF, EM01UPIFWC | 100% | 2006-04-13 | 2006-07-13 | 2006-07-29 | 0 | 0 | 01 | EK | YP0 | 010 | FP | Y | X | E | E2B2 |  |  |  |  |  |  |  |  |
| EK020FP460 |  | FP Electrical Area Classification OSBL - IFC |  | 10d | 2006-05-01 A | 2006-08-18 A | EK010PI014, EK010PI013, EK000FP012, EK010PI012 | 100% | 2006-05-15 | 2006-05-26 | 2006-07-29 | 0 | 0 | 01 | EK | ZE0 | 010 | FP | Z | X | E | E2B2 |  |  |  |  |  |  |  |  |
| EK010FP040 |  | FP Firewater Pump P&IDs - Development & Issue IFC |  | 69d | 2006-07-18 A | 2006-09-27 A | EK010FP031 SS | 100% | 2006-07-18 | 2006-10-20 | 2006-07-29 | 0 | 0 | 01 | EK | YP0 | 010 | FP | Y | X | E | E2B2 |  |  |  |  |  |  |  |  |
|  | SY | **Systems Engineering** |  |  | 2005-03-21 | 2006-01-24 |  |  |  |  |  |  |  |  |  |  |  |  |  |  |  |  |  |  |  |  |  |  |  |  |
| EK010SY010 |  | 010 Issue Marked up FMCL U&O / Dock P&ID's |  | 10d | 2005-03-21 A | 2005-03-23 A | EK000YA002 SS+15d | 100% | 2005-03-21 | 2005-04-01 | 2006-07-29 | 0 | 0 | 01 | EK | YP0 | 010 | SY | Y | X | E | E2B2 | Y0 |  |  |  |  |  |  |  |
| EK000SY060 |  | 010 Util & Offsites Conceptual Design revw mtngs |  | 14d | 2005-04-11 A | 2005-04-18 A | EK000SY015 FF+3d | 100% | 2005-04-11 | 2005-04-28 | 2006-07-29 | 0 | 0 | 01 | EK | Y80 | 010 | SY | Y | X | E | E2B2 |  |  |  |  |  |  |  |  |
| EK000SY075 |  | 010 OSBL Hydraulic Calculations |  | 55d | 2005-04-11 A | 2005-08-29 A | EK000SY015 FF, EK000SY060 SS, EK000SY065 SS | 100% | 2005-04-11 | 2005-06-27 | 2006-07-29 | 0 | 0 | 01 | EK | Y70 | 010 | SY | Y | X | E | E2B2 |  |  |  |  |  |  |  |  |
| EK010SY020 |  | 010 CW Twr & FW Tanks P&ID development IDR Issue |  | 21d | 2005-05-06 A | 2005-05-26 A | EK000SY010, EK000SY060, EK010SY010, EK000SY065 SS | 100% | 2005-05-06 | 2005-06-06 | 2006-07-29 | 0 | 0 | 01 | EK | YP0 | 010 | SY | Y | X | E | E2B2 |  |  |  |  |  |  |  |  |
| EK010SY030 |  | 010 CW Twr & FW Tanks P&ID IDR Meeting milestone |  | 2d | 2005-06-01 A | 2005-06-02 A | EK010SY020 FS+3d | 100% |  |  | 2006-07-29 | 0 | 0 | 01 | EK | YP0 | 010 | SY | Y | X | E | E2B2 | Y0 |  |  |  |  |  |  |  |
| EK010SY040 |  | 010 CW Twr & FW Tanks P&IDs - ICA Issue development |  | 34d | 2005-06-03 A | 2005-07-21 A | EK010SY030 | 100% | 2005-06-03 | 2005-07-22 | 2006-07-29 | 0 | 0 | 01 | EK | YP0 | 010 | SY | Y | X | E | E2B2 | Y1 |  |  |  |  |  |  |  |
| EK010SY050 |  | 010 Twr & FW Tanks P&IDs - ICA Issue Milestone | milestone | 0d | 2005-07-21 A | 2005-07-21 A | EK010SY040 FF | 100% | 2005-07-22 | 2005-07-22 | 2006-07-29 | 0 | 0 | 01 | EK | YP0 | 010 | SY | Y | X | E | E2B2 | Y1 |  |  |  |  |  |  |  |
| EK010SY060 |  | 010 CW Twr & FW Tanks P&ID's - IPL Issue Development |  | 60d | 2005-07-25 A | 2005-12-01 A | EK010SY135 FF+10d, EK010SY050, EK010SY150 FF+5d | 100% | 2005-07-25 | 2005-10-14 | 2006-07-29 | 0 | 0 | 01 | EK | YP0 | 010 | SY | Y | X | E | E2B2 | Y2 |  |  |  |  |  |  |  |
| EK010SY135 |  | 010 CW Twr & FW Tanks CV & FE Process Data |  | 15d | 2005-08-29 A | 2005-09-16 A | EK010SY050 FS+10d, EK030SY135 SS+10d | 100% |  |  | 2006-07-29 | 0 | 0 | 01 | EK | Y50 | 010 | SY | Y | X | E | E2B2 |  |  |  |  |  |  |  |  |
| EK010SY150 |  | 010 Relief Valve Calculations - CW Twr & FW Tanks |  | 15d | 2005-09-13 A | 2005-10-26 A | EK010SY050, EK010SY135 FF+10d | 100% | 2005-09-13 | 2005-10-03 | 2006-07-29 | 0 | 0 | 01 | EK | Y50 | 010 | SY | Y |  | E | E2B2 |  | PSA08 | A |  |  |  |  |  |
| EK010SY185 |  | 010 SP Item Data Sheets - CW Twr & FW Tanks |  | 10d | 2005-10-26 A | 2006-01-24 A | EK010SY050, EK010SY150 | 100% | 2005-10-27 | 2005-11-09 | 2006-07-29 | 0 | 0 | 01 | EK | Y90 | 010 | SY | Y |  | E | E2B2 |  | PS000 |  |  |  |  |  |  |
| EK010SY155 |  | 010 Issue Requisition - PSA08 Relief Valves - CW Twr & FW Tanks |  | 5d | 2005-11-04 A | 2005-12-20 A | EK010SY150 | 100% | 2005-11-04 | 2005-11-11 | 2006-07-29 | 0 | 0 | 01 | EK | Y50 | 010 | SY | Y |  | E | E2B2 |  | PSA08 | A |  |  |  |  |  |
| EK010SY090 |  | 010 CW Twr & FW Tanks P&IDs IPL Issue Milestone | milestone | 0d | 2005-12-01 A | 2005-12-01 A | EK010SY060 FF | 100% | 2005-11-30 | 2005-11-30 | 2006-07-29 | 0 | 0 | 01 | EK | YP0 | 010 | SY | Y | X | E | E2B2 | Y2 |  |  |  |  |  |  |  |
| EK01ASY170 |  | 01A OSBL P&IDs IPL & Line List Issue Milestone | milestone | 0d | 2005-12-01 A | 2005-12-01 A | EK010SY090 FF | 100% | 2005-11-30 | 2005-11-30 | 2006-07-29 | 0 | 0 | 01 | EK | YP0 | 01A | SY | Y |  | E | E2B2 | Y2 |  |  | 170 | 01A | SY170 | 30 | 27 |
| EK01BSY170 |  | 01B OSBL P&IDs IPL & Line List Issue Milestone | milestone | 0d | 2005-12-01 A | 2005-12-01 A | EK010SY090 FF | 100% | 2005-11-30 | 2005-11-30 | 2006-07-29 | 0 | 0 | 01 | EK | YP0 | 01B | SY | Y |  | E | E2B2 | Y2 |  |  | 170 | 01B | SY170 | 16 | 18 |
| EK01CSY170 |  | 01C OSBL P&IDs IPL & Line List Issue Milestone | milestone | 0d | 2005-12-01 A | 2005-12-01 A | EK010SY090 FF | 100% | 2005-11-30 | 2005-11-30 | 2006-07-29 | 0 | 0 | 01 | EK | YP0 | 01C | SY | Y |  | E | E2B2 | Y2 |  |  | 170 | 01C | SY170 | 21 | 24 |
| EK01DSY170 |  | 01D OSBL P&IDs IPL & Line List Issue Milestone | milestone | 0d | 2005-12-01 A | 2005-12-01 A | EK010SY090 FF | 100% | 2005-11-30 | 2005-11-30 | 2006-07-29 | 0 | 0 | 01 | EK | YP0 | 01D | SY | Y |  | E | E2B2 | Y2 |  |  | 170 | 01D | SY170 | 10 | 31 |
| EK01ESY170 |  | 01E OSBL P&IDs IPL & Line List Issue Milestone | milestone | 0d | 2005-12-01 A | 2005-12-01 A | EK010SY090 FF | 100% | 2005-11-30 | 2005-11-30 | 2006-07-29 | 0 | 0 | 01 | EK | YP0 | 01E | SY | Y |  | E | E2B2 | Y2 |  |  | 170 | 01E | SY170 | 7 | 7 |
| EK01FSY170 |  | 01F OSBL P&IDs IPL & Line List Issue Milestone | milestone | 0d | 2005-12-01 A | 2005-12-01 A | EK010SY090 FF | 100% | 2005-11-30 | 2005-11-30 | 2006-07-29 | 0 | 0 | 01 | EK | YP0 | 01F | SY | Y |  | E | E2B2 | Y2 |  |  | 170 | 01F | SY170 | 5 | 5 |
| EK01HSY170 |  | 01H OSBL P&IDs IPL & Line List Issue Milestone | milestone | 0d | 2005-12-01 A | 2005-12-01 A | EK010SY090 FF | 100% | 2005-11-30 | 2005-11-30 | 2006-07-29 | 0 | 0 | 01 | EK | YP0 | 01H | SY | Y |  | E | E2B2 | Y2 |  |  | 170 | 01H | SY170 | 22 | 39 |
| EK01JSY170 |  | 01J OSBL P&IDs IPL & Line List Issue Milestone | milestone | 0d | 2005-12-01 A | 2005-12-01 A | EK010SY090 FF | 100% | 2005-11-30 | 2005-11-30 | 2006-07-29 | 0 | 0 | 01 | EK | YP0 | 01J | SY | Y |  | E | E2B2 | Y2 |  |  | 170 | 01J | SY170 | 37 | 11 |
| EK01YSY170 |  | 01Y OSBL P&IDs IPL & Line List Issue Milestone | milestone | 0d | 2005-12-01 A | 2005-12-01 A | EK010SY090 FF | 100% | 2005-11-30 | 2005-11-30 | 2006-07-29 | 0 | 0 | 01 | EK | YP0 | 01Y | SY | Y |  | E | E2B2 | Y2 |  |  | 170 | 01Y | SY170 | 17 | 10 |

| ID | WBS | Activity | Duration | Start | Finish | Predecessors | Complete | Planned start | Planned finish | zData Date | PCA Criticality Index | PCA Duration Sensitivity | EB02 - UNIT | EB01 - RESP | EB06 - WORK OP | EB03 - AREA | EB05 - DISCIPLINE | EB07 - REQN | EB10 - KEY | EB04 - CLASS | EB11 - FLAG | EB00 - EPC | EB17 - Suffix | EB09 - IPMS | Optimistic Duration | Most Likely Duration | Pessimistic Duration | EB21 - Rev 2 Risk Associations | Sequence | User Defined Field 1 | User Definer Field 2 | EB15 - Civil / U/G Path of Construction | EB16 - Piping Path of Construction |
| --- | --- | --- | --- | --- | --- | --- | --- | --- | --- | --- | --- | --- | --- | --- | --- | --- | --- | --- | --- | --- | --- | --- | --- | --- | --- | --- | --- | --- | --- | --- | --- | --- | --- |
|  | 03 | **Utility Plant** |  | 2005-04-01 | 2007-03-15 |  |  |  |  |  |  |  |  |  |  |  |  |  |  |  |  |  |  |  |  |  |  |  |  |  |  |  |  |
|  | AR | **Architecture Engineering** |  |  |  |  |  |  |  |  |  |  |  |  |  |  |  |  |  |  |  |  |  |  |  |  |  |  |  |  |  |  |  |
|  | PE | **Project Engineering** |  |  |  |  |  |  |  |  |  |  |  |  |  |  |  |  |  |  |  |  |  |  |  |  |  |  |  |  |  |  |  |
|  | PS | **Planning & Scheduling** |  |  |  |  |  |  |  |  |  |  |  |  |  |  |  |  |  |  |  |  |  |  |  |  |  |  |  |  |  |  |  |
|  | QM | **Quality Mgmt.** |  |  |  |  |  |  |  |  |  |  |  |  |  |  |  |  |  |  |  |  |  |  |  |  |  |  |  |  |  |  |  |
|  | CE | **Chief Engineering** |  |  |  |  |  |  |  |  |  |  |  |  |  |  |  |  |  |  |  |  |  |  |  |  |  |  |  |  |  |  |  |
|  | CV | **Civil Engineering** |  |  |  |  |  |  |  |  |  |  |  |  |  |  |  |  |  |  |  |  |  |  |  |  |  |  |  |  |  |  |  |
|  | EL | **Electrical Engineering** |  |  |  |  |  |  |  |  |  |  |  |  |  |  |  |  |  |  |  |  |  |  |  |  |  |  |  |  |  |  |  |
|  | EV | **Environmental Engineering** |  |  |  |  |  |  |  |  |  |  |  |  |  |  |  |  |  |  |  |  |  |  |  |  |  |  |  |  |  |  |  |
|  | FP | **Fire Protection Engineering** |  |  |  |  |  |  |  |  |  |  |  |  |  |  |  |  |  |  |  |  |  |  |  |  |  |  |  |  |  |  |  |
|  | GE | **General Engineering (All Disciplines)** |  |  |  |  |  |  |  |  |  |  |  |  |  |  |  |  |  |  |  |  |  |  |  |  |  |  |  |  |  |  |  |
|  | IC | **Control Sytems Engineering** |  | 2005-10-24 | 2006-10-23 |  |  |  |  |  |  |  |  |  |  |  |  |  |  |  |  |  |  |  |  |  |  |  |  |  |  |  |  |
| EK030I1100 |  | 030 Orific Plates - D/S Utility Plant | 15d | 2005-10-24 A | 2005-12-05 A | EK030SY135 | 100% | 2005-10-24 | 2005-11-11 | 2006-07-29 | 0 | 0 | 03 | EK | I21 | 030 | IC | I2110 | IR | I | N | E | E2B2 |  |  |  |  |  |  |  |  |  |  |
| EK030IC210 |  | 030 Control Valves - D/S, Sizing,Tech Eval | 15d | 2005-10-24 A | 2006-01-20 A | EK030SY135 | 100% | 2005-10-24 | 2005-11-11 | 2006-07-29 | 0 | 0 | 03 | EK | I22 | 030 | IC | I2210 | IR | I | N | E | E2B2 |  |  |  |  |  |  |  |  |  |  |
| EK030I1105 |  | 030 Orific Plates - Purchase ERW Utility Plant | 5d | 2006-01-30 A | 2006-04-11 A | EK030I1100 | 100% | 2006-01-30 | 2006-02-03 | 2006-07-29 | 0 | 0 | 03 | EK | I21 | 030 | IC | I2110 | IR | I | N | E | E2B2 | F |  |  |  |  |  |  |  |  |  |
| EK030IC213 |  | 030 Control Valves - Purchase ERW | 5d | 2006-01-31 A | 2006-07-07 A | EK030IC210 | 100% | 2006-01-31 | 2006-02-06 | 2006-07-29 | 0 | 0 | 03 | EK | I22 | 030 | IC | I2210 | IR | I | N | E | E2B2 | F |  |  |  |  |  |  |  |  |  |
| EK03AIC300 |  | 03A In Line Instrument Approved Vendor Data | 20d | 2006-02-01 A | 2006-06-19 A | EK030IC210, EK030I1100 | 100% | 2005-11-03 | 2005-11-30 | 2006-07-29 | 0 | 0 | 03 | EK | I00 | 03A | IC |  |  | I |  | E |  |  | 80 | 86 | 90 | 06 |  |  |  |  |  |
| EK03BIC300 |  | 03B In Line Instrument Approved Vendor Data | 20d | 2006-02-01 A | 2006-06-19 A | EK030IC210, EK030I1100 | 100% | 2005-11-03 | 2005-11-30 | 2006-07-29 | 0 | 2.9 | 03 | EK | I00 | 03B | IC |  |  | I |  | E |  |  | 95 | 109 | 110 | 06 |  |  |  |  |  |
| EK03CIC300 |  | 03C In Line Instrument Approved Vendor Data | 20d | 2006-02-01 A | 2006-05-15 A | EK030IC210, EK030I1100 | 100% | 2005-11-03 | 2005-11-30 | 2006-07-29 | 0 | 0 | 03 | EK | I00 | 03C | IC |  |  | I |  | E |  |  |  |  |  |  |  |  |  |  |  |
| EK03DIC300 |  | 03D In Line Instrument Approved Vendor Data | 20d | 2006-02-01 A | 2006-06-19 A | EK030IC210, EK030I1100 | 100% | 2005-11-03 | 2005-11-30 | 2006-07-29 | 0 | 1.1 | 03 | EK | I00 | 03D | IC |  |  | I |  | E |  |  | 70 | 77 | 80 | 06 |  |  |  |  |  |
| EK03EIC300 |  | 03E In Line Instrument Approved Vendor Data | 20d | 2006-02-01 A | 2006-06-05 A | EK030IC210, EK030I1100 | 100% | 2005-11-03 | 2005-11-30 | 2006-07-29 | 0 | 3.8 | 03 | EK | I00 | 03E | IC |  |  | I |  | E |  |  | 75 | 78 | 80 | 06 |  |  |  |  |  |
| EK03FIC300 |  | 03F In Line Instrument Approved Vendor Data | 20d | 2006-02-01 A | 2006-06-20 A | EK030IC210, EK030I1100 | 100% | 2005-11-03 | 2005-11-30 | 2006-07-29 | 0 | 0.8 | 03 | EK | I00 | 03F | IC |  |  | I |  | E |  |  | 80 | 86 | 90 | 06 |  |  |  |  |  |
| EK03YIC300 |  | 03Y In Line Instrument Approved Vendor Data | 20d | 2006-02-01 A | 2006-06-21 A | EK030IC210, EK030I1100 | 100% | 2005-11-03 | 2005-11-30 | 2006-07-29 | 0 | 3.9 | 03 | EK | I00 | 03Y | IC |  |  | I |  | E |  |  | 80 | 86 | 90 | 06 |  |  |  |  |  |
| EK03CIC120 |  | 03C Instrument Detail Model / Review | 20d | 2006-04-21 A | 2006-05-18 A | EM03CPI134 FF | 100% |  |  | 2006-07-29 | 0 | 0 | 03 | EK | ID1 | 03C | IC |  |  | I |  | E | E5B5 |  |  |  |  |  | 120 | 03C | IC120 | 31 | 14 |
| EK03BIC120 |  | 03B Instrument Detail Model / Review | 55d | 2006-06-19 A | 2006-09-13 A | EM03BPI134 FF | 100% | 2006-06-19 | 2006-09-01 | 2006-07-29 | 0 | 0 | 03 | EK | ID1 | 03B | IC |  |  | I |  | E | E5B5 |  |  |  |  |  | 120 | 03B | IC120 | 20 | 23 |
| EK03DIC120 |  | 03D Instrument Detail Model / Review | 25d | 2006-06-19 A | 2006-06-26 A | EM03DPI134 FF | 100% | 2006-06-19 | 2006-07-21 | 2006-07-29 | 0 | 0 | 03 | EK | ID1 | 03D | IC |  |  | I |  | E | E5B5 |  |  |  |  |  | 120 | 03D | IC120 | 12 | 32 |
| EK03FIC120 |  | 03F Instrument Detail Model / Review | 30d | 2006-06-19 A | 2006-09-04 A | EM03FPI134 FF | 100% | 2006-06-19 | 2006-07-28 | 2006-07-29 | 0 | 0 | 03 | EK | ID1 | 03F | IC |  |  | I |  | E | E5B5 |  |  |  |  |  | 120 | EK200 | IC120 | 26 | 38 |
| EK03AIC120 |  | 03A Instrument Detail Model / Review | 20d | 2006-07-07 A | 2006-09-04 A | EM03API134 FF | 100% | 2006-07-17 | 2006-08-11 | 2006-07-29 | 0 | 0 | 03 | EK | ID1 | 03A | IC |  |  | I |  | E | E5B5 |  |  |  |  |  | 120 | 03A | IC120 | 25 | 13 |
| EK03YIC120 |  | 03Y Instrument Detail Model / Review | 25d | 2006-08-15 A | 2006-09-20 A | EM03YPI134 FF | 100% | 2006-08-17 | 2006-09-20 | 2006-07-29 | 0 | 0 | 03 | EK | ID1 | 03Y | IC |  |  | I |  | E | E5B5 |  |  |  |  |  | 120 | 03Y | IC120 | 13 | 12 |
| EK03EIC120 |  | 03E Instrument Detail Model / Review | 35d | 2006-09-04 A | 2006-10-23 A | EM03EPI134 FF | 100% | 2006-09-04 | 2006-10-20 | 2006-07-29 | 0 | 2.6 | 03 | EK | ID1 | 03E | IC |  |  | I |  | E | E5B5 |  | 33 | 35 | 40 |  | 120 | 03E | IC120 | 35 | 33 |

| ID | WBS | Activity | Duration | Start | Finish | Predecessors | Complete | Planned start | Planned finish | Calendar | zData Date | PCA Criticality Index | PCA Duration Sensitivity | EB02 - UNIT | EB01 - RESP | EB06 - WORK OP | EB03 - AREA | EB05 - DISCIPLINE | EB07 - REQN | EB08 - TAG | EB04 - CLASS | EB09 - IPMS | EB00 - EPC | Sequence | User Defined Field 1 | User Definer Field 2 | EB10 - KEY | EB15 - Civil / U/G Path of Construction | EB16 - Piping Path of Construction | EB17 - Suffix | user_text1 | EB21 - Rev 2 Risk Associations | Optimistic Duration | Most Likely Duration | Pessimistic Duration | user_integer1 | EB11 - FLAG |
| --- | --- | --- | --- | --- | --- | --- | --- | --- | --- | --- | --- | --- | --- | --- | --- | --- | --- | --- | --- | --- | --- | --- | --- | --- | --- | --- | --- | --- | --- | --- | --- | --- | --- | --- | --- | --- | --- |
|  | MB | **Furnaces & Flares Engineering** |  |  |  |  |  |  |  |  |  |  |  |  |  |  |  |  |  |  |  |  |  |  |  |  |  |  |  |  |  |  |  |  |  |  |  |
|  | MC | **Exchangers Engineering** |  |  |  |  |  |  |  |  |  |  |  |  |  |  |  |  |  |  |  |  |  |  |  |  |  |  |  |  |  |  |  |  |  |  |  |
|  | MD | **Vessels Engineering** |  | 2005-09-16 | 2006-06-30 |  |  |  |  |  |  |  |  |  |  |  |  |  |  |  |  |  |  |  |  |  |  |  |  |  |  |  |  |  |  |  |  |
| PK03FMD03 |  | 03F MD411 2006-F Boiler Blowdown Drum - Prod. V. Data | 35d | 2005-09-16 A | 2005-10-14 A | PK000MD46J | 100% | 2006-01-30 | 2006-03-17 | EBWK - Global | 2006-07-29 | 0 | 0 | 03 | EK | MD4 | 03F | MD | MD411 | X | M | M | E |  |  |  |  |  |  |  |  |  |  |  |  |  |  |
| PK03CMD06 |  | 03C MD411 2203-F 50% Caustic Storage Tank - Prod. V. Data | 35d | 2006-01-30 A | 2006-01-30 A | PK000MD46J | 100% | 2006-01-30 | 2006-03-17 | EBWK - Global | 2006-07-29 | 0 | 0 | 03 | EK | MD4 | 03C | MD | MD411 | X | M | M | E |  |  |  |  |  |  |  |  |  |  |  |  |  |  |
| PK03CMD07 |  | 03C MD411 2204-F 98% Sulfuric Acid Drum - Prod. V. Data | 35d | 2006-01-30 A | 2006-01-30 A | PK000MD46J | 100% | 2006-01-30 | 2006-03-17 | EBWK - Global | 2006-07-29 | 0 | 0 | 03 | EK | MD4 | 03C | MD | MD411 | X | M | M | E |  |  |  |  |  |  |  |  |  |  |  |  |  |  |
| PK03DMF00 |  | 03D MF302 2002-F Demineralized Water Tank - Fdn. V. Data (Subcontract) | 35d | 2006-02-27 A | 2006-04-17 A | EK000MF32F | 100% | 2006-02-27 | 2006-04-14 | EBWK - Global | 2006-07-29 | 0 | 0 | 03 | EK | MF3 | 03D | MD | MF302 | X | M | M | E |  |  |  |  |  |  |  |  |  |  |  |  |  |  |
| PK03DMF01 |  | 03D MF302 2002-F Demineralized Water Tank - Prod. V. Data (Subcontract) | 35d | 2006-02-27 A | 2006-06-30 A | EK000MF32F | 100% | 2006-02-27 | 2006-04-14 | EBWK - Global | 2006-07-29 | 0 | 0 | 03 | EK | MF3 | 03D | MD | MF302 | X | M | M | E |  |  |  |  |  |  |  |  |  |  |  |  |  |  |
|  | MJ | **Machinery Engineering** |  | 2005-10-17 | 2006-11-27 |  |  |  |  |  |  |  |  |  |  |  |  |  |  |  |  |  |  |  |  |  |  |  |  |  |  |  |  |  |  |  |  |
| PK03EMU100 |  | 03E Recv. Planning V. Data - Utility Equip. | 1d | 2005-10-17 A | 2005-10-17 A | PK03DMJ154 FF | 100% | 2005-11-16 | 2005-11-16 |  | 2006-07-29 | 0 | 0 | 03 | EK | MU3 | 03E | MJ | MU330 |  | M | J | E | 100 | 03E | MU100 | P15 | 35 | 33 | E2B2 |  |  |  |  |  |  |  |
| PK03BMJ154 |  | 03B Recv. Planning V. Data - Pumps 2401-J, 2401-JA | 1d | 2005-10-17 A | 2005-10-17 A | PK000MJ36N | 100% |  |  |  | 2006-07-29 | 0 | 0 | 03 | EK | MJ3 | 03B | MJ | P2030 | 2401J | M | J | E | 154 | 03B | MJ154 | P15 | 20 | 23 | E2B2 |  |  |  |  |  |  |  |
| PK03CMJ154 |  | 03C Recv. Planning V. Data - Pumps 2205-J/JA, 2206-J/JA | 1d | 2005-10-17 A | 2005-10-17 A | PK000MJ36N | 100% |  |  |  | 2006-07-29 | 0 | 0 | 03 | EK | MJ3 | 03C | MJ | P2030 |  | M | J | E | 154 | 03C | MJ154 | P15 | 31 | 14 | E2B2 |  |  |  |  |  |  |  |
| PK03DMJ154 |  | 03D Recv. Planning V. Data - Pumps 2202-J/JA | 1d | 2005-10-17 A | 2005-10-17 A | PK000MJ36N | 100% |  |  |  | 2006-07-29 | 0 | 0 | 03 | EK | MJ3 | 03D | MJ | P2030 | 2202JA | M | J | E | 154 | 03D | MJ154 | P15 | 12 | 32 | E2B2 |  |  |  |  |  |  |  |
| PK03DMJV02 |  | 03D MJ305 2002-J/JA - Civil Prod. V. Data | 35d | 2006-01-27 A | 2006-06-02 A | PK000MJ36J, PK000MJ35N | 100% | 2006-03-27 | 2006-05-12 | EBWK - Global | 2006-07-29 | 0 | 0 | 03 | EK | MJ3 | 03D | MJ | MJ305 | X | M | M | E |  |  |  |  |  |  |  | Updated G/A drwg required |  |  |  |  |  |  |
| PK03DMJV01 |  | 03D MJ305 2002-J/JA - Piping Prod. V. Data | 35d | 2006-01-30 A | 2006-06-02 A | PK000MJ36J, PK000MJ35N | 100% | 2006-03-27 | 2006-05-12 | EBWK - Global | 2006-07-29 | 0 | 0 | 03 | EK | MJ3 | 03D | MJ | MJ305 | X | M | M | E |  |  |  |  |  |  |  |  |  |  |  |  |  |  |
| PK03DMJV03 |  | 03D MJ305 2002-J/JA - E&I Prod. V. Data | 35d | 2006-01-30 A | 2006-08-14 A | PK000MJ36J, PK000MJ35N | 100% | 2006-03-27 | 2006-05-12 | EBWK - Global | 2006-07-29 | 0 | 0 | 03 | EK | MJ3 | 03D | MJ | MJ305 | X | M | M | E |  |  |  |  |  |  |  |  |  |  |  |  |  |  |
| PK03BMUV01 |  | 03B MU222 2401-J/JA - Piping Prod. V. Data | 35d | 2006-01-30 A | 2006-04-07 A | PK000MU22J, PK000MU22N | 100% | 2006-01-30 | 2006-03-17 | EBWK - Global | 2006-07-29 | 0 | 0 | 03 | EK | MU2 | 03B | MJ | MU222 | X | M | M | E |  |  |  |  |  |  |  |  | 06 |  |  |  |  |  |
| PK03BMUV02 |  | 03B MU222 2401-J/JA - Civil Prod. V. Data | 35d | 2006-01-30 A | 2006-04-07 A | PK000MU22J, PK000MU22N | 100% | 2006-01-30 | 2006-03-17 | EBWK - Global | 2006-07-29 | 0 | 0 | 03 | EK | MU2 | 03B | MJ | MU222 | X | M | M | E |  |  |  |  |  |  |  |  | 06 |  |  |  |  |  |
| PK03BMUV03 |  | 03B MU222,MJ305 2401-J/JA - E&I Prod. V. Data | 35d | 2006-01-30 A | 2006-05-25 A | PK000MU22J, PK000MU22N | 100% | 2006-01-30 | 2006-03-17 | EBWK - Global | 2006-07-29 | 0 | 0 | 03 | EK | MU2 | 03B | MJ | MU222 | X | M | M | E |  |  |  |  |  |  |  |  | 06 |  |  |  |  |  |
| PK03CMJV01 |  | 03C MJ305 2205-J/JA,2206-J/JA - Piping Prod. V. Data | 35d | 2006-01-30 A | 2006-04-03 A | PK000MJ36J | 100% | 2006-01-30 | 2006-03-17 | EBWK - Global | 2006-07-29 | 0 | 0 | 03 | EK | MJ3 | 03C | MJ | MJ305 | X | M | M | E |  |  |  |  |  |  |  |  |  |  |  |  |  |  |
| PK03CMJV02 |  | 03C MJ305 2205-J/JA,2206-J/JA - Civil Prod. V. Data | 35d | 2006-01-30 A | 2006-04-21 A | PK000MJ36J | 100% | 2006-01-30 | 2006-03-17 | EBWK - Global | 2006-07-29 | 0 | 0 | 03 | EK | MJ3 | 03C | MJ | MJ305 | X | M | M | E |  |  |  |  |  |  |  |  |  |  |  |  |  |  |
| PK03CMJV03 |  | 03C MJ305 2205-J/JA,2206-J/JA - E&I Prod. V. Data | 35d | 2006-01-30 A | 2006-06-07 A | PK000MJ36J | 100% | 2006-01-30 | 2006-03-17 | EBWK - Global | 2006-07-29 | 0 | 0 | 03 | EK | MJ3 | 03C | MJ | MJ305 | X | M | M | E |  |  |  |  |  |  |  |  |  |  |  |  |  |  |
| PK03EMUV01 |  | 03E MU330 2001-U - Piping Prod. V. Data | 35d | 2006-01-30 A | 2006-05-30 A | PK000MU33J, PK000MU33N FF | 100% | 2006-01-30 | 2006-03-17 | EBWK - Global | 2006-07-29 | 0 | 0 | 03 | EK | MU3 | 03E | MJ | MU330 | X | M | M | E |  |  |  |  |  |  |  |  | 06 | 90 | 96 | 110 |  |  |
| PK03EMUV02 |  | 03E MU330 2001-U - Civil Prod. V. Data | 35d | 2006-01-30 A | 2006-05-30 A | PK000MU33J, PK000MU33N FF | 100% | 2006-01-30 | 2006-03-17 | EBWK - Global | 2006-07-29 | 0 | 0 | 03 | EK | MU3 | 03E | MJ | MU330 | X | M | M | E |  |  |  |  |  |  |  |  | 06 | 90 | 96 | 110 |  |  |
| PK03EMUV03 |  | 03E MU330 2001-U - E&I Prod. V. Data | 35d | 2006-01-30 A | 2006-06-16 A | PK000MU33J, PK000MU33N FF | 100% | 2006-01-30 | 2006-03-17 | EBWK - Global | 2006-07-29 | 0 | 0 | 03 | EK | MU3 | 03E | MJ | MU330 | X | M | M | E |  |  |  |  |  |  |  |  | 06 | 90 | 96 | 110 |  |  |
| PK03FMUV01 |  | 03F MU222 2401-U - Piping Prod. V. Data | 35d | 2006-01-30 A | 2006-04-05 A | PK000MU22J | 100% | 2006-01-30 | 2006-03-17 | EBWK - Global | 2006-07-29 | 0 | 0 | 03 | EK | MU2 | 03F | MJ | MU222 | X | M | M | E |  |  |  |  |  |  |  |  |  |  |  |  |  |  |
| PK03FMUV02 |  | 03F MU222 2401-U - Civil Prod. V. Data | 35d | 2006-01-30 A | 2006-04-05 A | PK000MU22J | 100% | 2006-01-30 | 2006-03-17 | EBWK - Global | 2006-07-29 | 0 | 0 | 03 | EK | MU2 | 03F | MJ | MU222 | X | M | M | E |  |  |  |  |  |  |  |  |  |  |  |  |  |  |
| PK03FMUV03 |  | 03F MU222 2401-U - E&I Prod. V. Data | 35d | 2006-01-30 A | 2006-05-25 A | PK000MU22J | 100% | 2006-01-30 | 2006-03-17 | EBWK - Global | 2006-07-29 | 0 | 0 | 03 | EK | MU2 | 03F | MJ | MU222 | X | M | M | E |  |  |  |  |  |  |  |  |  |  |  |  |  |  |
| PK03FMUV04 |  | 03F MU410 2002-U - Piping Prod. V. Data | 35d | 2006-01-30 A | 2006-05-25 A | PK000MU41J | 100% | 2006-01-30 | 2006-03-17 | EBWK - Global | 2006-07-29 | 0 | 0 | 03 | EK | MU4 | 03F | MJ | MU410 | X | M | M | E |  |  |  |  |  |  |  |  | 06 | 30 | 40 | 46 |  |  |
| PK03FMUV05 |  | 03F MU410 2002-U - Civil Prod. V. Data | 35d | 2006-01-30 A | 2006-05-25 A | PK000MU41J | 100% | 2006-01-30 | 2006-03-17 | EBWK - Global | 2006-07-29 | 0 | 0 | 03 | EK | MU4 | 03F | MJ | MU410 | X | M | M | E |  |  |  |  |  |  |  | Need skid dwgs | 06 | 30 | 40 | 46 |  |  |
| PK03FMUV06 |  | 03F MU410 2002-U - E&I Prod. V. Data | 35d | 2006-01-30 A | 2006-07-25 A | PK000MU41J | 100% | 2006-01-30 | 2006-03-17 | EBWK - Global | 2006-07-29 | 0 | 0 | 03 | EK | MU4 | 03F | MJ | MU410 | X | M | M | E |  |  |  |  |  |  |  | Burner Mgmt., Logic Info has been recieved. | 06 | 30 | 40 | 46 |  |  |
| PK03FMUV07 |  | 03F MU310 2001-L - Piping Prod. V. Data | 35d | 2006-02-14 A | 2006-06-26 A | PK000MU31J | 100% | 2006-02-14 | 2006-04-03 | EBWK - Global | 2006-07-29 | 0 | 0 | 03 | EK | MU3 | 03F | MJ | MU310 | X | M | M | E |  |  |  |  |  |  |  |  | 06 | 30 | 35 | 50 |  |  |
| PK03FMUV08 |  | 03F MU310 2001-L - Civil Prod. V. Data | 35d | 2006-02-14 A | 2006-06-26 A | PK000MU31J | 100% | 2006-02-14 | 2006-04-03 | EBWK - Global | 2006-07-29 | 0 | 0 | 03 | EK | MU3 | 03F | MJ | MU310 | X | M | M | E |  |  |  |  |  |  |  |  | 06 | 30 | 35 | 50 |  |  |
| PK03FMUV09 |  | 03F MU310 2001-L - E&I Prod. V. Data | 35d | 2006-02-14 A | 2006-06-26 A | PK000MU31J | 100% | 2006-02-14 | 2006-04-03 | EBWK - Global | 2006-07-29 | 0 | 0 | 03 | EK | MU3 | 03F | MJ | MU310 | X | M | M | E |  |  |  |  |  |  |  |  | 06 | 30 | 35 | 50 |  |  |
| PK03AMLV01 |  | 03A ML500 2003-L - Piping Prod. V. Data | 35d | 2006-03-03 A | 2006-07-25 A | PK000ML50J, PK000ML50N FF, PK000ML90J, EK000EB015, EK000ML50Z, EK000YA000 FS+5d, PK000ML52J, EK000ML50F | 100% | 2006-05-05 | 2006-06-23 | EBWK - Global | 2006-07-29 | 0 | 0 | 03 | EK | ML5 | 03A | MJ | ML500 | X | M | M | E |  |  |  |  |  |  |  |  | 06 | 50 | 60 | 70 |  |  |
| PK03AMLV02 |  | 03A ML500 2003-L - Civil Prod. V. Data | 35d | 2006-03-03 A | 2006-06-09 A | PK000ML50J, PK000ML50N FF, PK000ML90J, EK000EB015, EK000ML50Z, EK000YA000 FS+5d, PK000ML52J, EK000ML50F | 100% | 2006-05-05 | 2006-06-23 | EBWK - Global | 2006-07-29 | 0 | 0 | 03 | EK | ML5 | 03A | MJ | ML500 | X | M | M | E |  |  |  |  |  |  |  | Off skid vessel needed | 06 | 50 | 60 | 70 |  |  |
| PK03AMLV03 |  | 03A ML500 2003-L - E&I Prod. V. Data | 35d | 2006-03-03 A | 2006-11-27 A | PK000ML50J, PK000ML50N FF, PK000ML90J, EK000EB015, EK000ML50Z, EK000YA000 FS+5d, PK000ML52J, EK000ML50F | 100% | 2006-05-05 | 2006-06-23 | EBWK - Global | 2006-07-29 | 0 | 0 | 03 | EK | ML5 | 03A | MJ | ML500 | X | M | M | E |  |  |  |  |  |  |  | Waiting on JB's & wiring info. | 06 | 50 | 60 | 70 |  |  |
| PK03BMU100 |  | 03B Recv. Planning V. Data - Utility Equip. 2401-J/JA | 20d | 2006-04-15 A | 2006-05-01 A | PK000MU22N, PK000MU29N | 100% | 2006-05-15 | 2006-06-09 |  | 2006-07-29 | 0 | 0 | 03 | EK | MU2 | 03B | MJ | P2030 | 2401J | M | J | E | 100 | 03B | MU100 | P15 | 20 | 23 | E2B2 |  |  |  |  |  |  |  |
| PK03BMUV04 |  | 03B MU292 2404-L - Piping Prod. V. Data | 35d | 2006-04-19 A | 2006-06-14 A | PK000MU29J, PK000MU29N SS | 100% | 2006-05-15 | 2006-06-30 | EBWK - Global | 2006-07-29 | 0 | 0 | 03 | EK | MU2 | 03B | MJ | MU292 | X | M | M | E |  |  |  |  |  |  |  |  | 06 | 60 | 70 | 100 | 35 | CD |
| PK03BMUV05 |  | 03B MU292 2404-L - Civil Prod. V. Data | 35d | 2006-04-19 A | 2006-07-18 A | PK000MU29J, PK000MU29N SS | 100% | 2006-05-15 | 2006-06-30 | EBWK - Global | 2006-07-29 | 0 | 0 | 03 | EK | MU2 | 03B | MJ | MU292 | X | M | M | E |  |  |  |  |  |  |  |  | 06 | 60 | 70 | 100 | 35 | CD |
| PK03BMUV06 |  | 03B MU292 2404-L - E&I Prod. V. Data | 35d | 2006-04-19 A | 2006-07-18 A | PK000MU29J, PK000MU29N SS | 100% | 2006-05-15 | 2006-06-30 | EBWK - Global | 2006-07-29 | 0 | 0 | 03 | EK | MU2 | 03B | MJ | MU292 | X | M | M | E |  |  |  |  |  |  |  |  | 06 | 60 | 70 | 100 | 35 | CD |

| ID | WBS | Activity | Duration | Start | Finish | Predecessors | Complete | Planned start | Planned finish | Total float | Free float | Calendar | zData Date | PCA Criticality Index | PCA Duration Sensitivity | EB02 - UNIT | EB01 - RESP | EB06 - WORK OP | EB03 - AREA | EB05 - DISCIPLINE | EB10 - KEY | EB04 - CLASS | EB11 - FLAG | EB00 - EPC | EB17 - Suffix | Sequence | User Defined Field 1 | User Definer Field 2 | EB15 - Civil / U/G Path of Construction | EB16 - Piping Path of Construction | user_integer2 | user_text2 | EB12 - TEMP | EB19 - System | Optimistic Duration | Most Likely Duration | Pessimistic Duration | user_integer1 | user_text1 | EB21 - Rev 2 Risk Associations |
| --- | --- | --- | --- | --- | --- | --- | --- | --- | --- | --- | --- | --- | --- | --- | --- | --- | --- | --- | --- | --- | --- | --- | --- | --- | --- | --- | --- | --- | --- | --- | --- | --- | --- | --- | --- | --- | --- | --- | --- | --- |
|  | PI | **Piping Engineering** |  | 2005-04-01 | 2007-03-15 |  |  |  |  |  |  |  |  |  |  |  |  |  |  |  |  |  |  |  |  |  |  |  |  |  |  |  |  |  |  |  |  |  |  |  |
| EK030PI005 |  | Develop Plot Plan & ID Areas - Utility Plant IFI | 10d | 2005-04-01 A | 2005-04-08 A | EK020PI010 | 100% | 2005-04-01 | 2005-04-14 |  |  |  | 2006-07-29 | 0 | 0 | 03 | EK | P10 | 030 | PI | P17 | P | X | E | E2B2 |  |  |  |  |  |  |  |  |  |  |  |  |  |  |  |
| EK000PI140 |  | Eqvlnt Line Counts / Planning Area-Utility Plant | 10d | 2005-04-04 A | 2005-04-08 A | EK030PI005 SS+5d, EK050PI005 SS+5d | 100% | 2005-04-04 | 2005-04-15 |  |  |  | 2006-07-29 | 0 | 0 | 03 | EK | G10 | 030 | PI | P20 | P | X | E | E2B2 |  |  |  |  |  |  |  |  |  |  |  |  |  |  |  |
| EK030PI010 |  | Develop Plot Plan & ID Areas - Utility Plant ICA | 20d | 2005-04-22 A | 2005-11-11 A | EK020PI010, EK030PI005 | 100% | 2005-04-22 | 2005-05-19 |  |  |  | 2006-07-29 | 0 | 0 | 03 | EK | P10 | 030 | PI | P17 | P | X | E | E2B2 |  |  |  |  |  |  |  |  |  |  |  |  |  |  |  |
| EK03FPI000 |  | 03F Preliminary Drawings for Supersketch U-2002 | 1d | 2005-08-03 A | 2005-08-03 A | EK020PI010 | 100% | 2005-08-02 | 2005-08-02 |  |  |  | 2006-07-29 | 0 | 0 | 03 | EK | P20 | 03F | PI | P00 | P | X | E | E2B2 | 030 | 01B | PI030 | 26 | 38 |  |  |  |  |  |  |  |  |  |  |
| EK03API000 |  | 03A Preliminary Drawings for Supersketch L-2003 | 1d | 2005-08-12 A | 2005-08-12 A | EK030PI010 SS | 100% |  |  |  |  |  | 2006-07-29 | 0 | 0 | 03 | EK | P20 | 03A | PI | P00 | P | X | E | E2B2 | 030 | 01B | PI030 | 25 | 13 |  |  |  |  |  |  |  |  |  |  |
| EK03API030 |  | 03A Conceptual Layout - Supersketches | 3d | 2005-08-15 A | 2005-08-22 A | EK030SY030, EK030PI010 SS | 100% | 2005-08-08 | 2005-08-10 |  |  |  | 2006-07-29 | 0 | 0 | 03 | EK | P20 | 03A | PI | P01 | P | X | E | E2B2 | 030 | 03A | PI030 | 25 | 13 |  |  |  |  |  |  |  |  |  |  |
| EK03DPI030 |  | 03D Conceptual Layout - Supersketches | 5d | 2005-08-31 A | 2005-09-06 A | EK020PI010 SS+5d, EK030SY030, EK030SY020, EK030PI010 SS | 100% |  |  |  |  |  | 2006-07-29 | 0 | 0 | 03 | EK | P20 | 03D | PI | P01 | P | X | E | E2B2 | 030 | 03D | PI030 | 12 | 32 |  |  |  |  |  |  |  |  |  |  |
| EK03UPIFWA |  | 03U Plant Layout Model - Firewater | 30d | 2005-09-22 A | 2005-11-04 A | EK030SY050 | 100% | 2005-08-15 | 2005-09-23 |  |  |  | 2006-07-29 | 0 | 0 | 03 | EK | U20 | 03U | PI | P02 | U |  | E | E2B2 |  |  |  | 1 | 1 | 16 | EK02UPICBA | X | FW |  |  |  |  |  |  |
| EK030PI011 |  | Plot Plan - Utility Plant Client ICA Approval | 10d | 2005-10-10 A | 2005-10-28 A | EK030PI010 | 100% | 2005-10-31 | 2005-11-11 |  |  |  | 2006-07-29 | 0 | 0 | 03 | EK | P10 | 030 | PI | P17 | P | X | E | E2B2 |  |  |  |  |  |  |  |  |  |  |  |  |  |  |  |
| EK03UPIOSA |  | 03U Plant Layout Model - Outfall Sewer | 5d | 2005-10-17 A | 2005-10-26 A | EK030SY050 | 100% | 2005-10-17 | 2005-10-21 |  |  |  | 2006-07-29 | 0 | 0 | 03 | EK | U20 | 03U | PI | P02 | U |  | E | E2B2 |  |  |  | 1 | 1 | 16 | EK02UPICBA | X | OS |  |  |  |  |  |  |
| EK03UPIASA |  | 03U Plant Layout Model - Acid Sewer | 10d | 2005-10-21 A | 2005-11-07 A | EK030SY050 | 100% | 2005-10-31 | 2005-11-11 |  |  |  | 2006-07-29 | 0 | 0 | 03 | EK | U20 | 03U | PI | P02 | U |  | E | E2B2 |  |  |  | 1 | 1 | 16 | EK02UPICBA | X | AS |  |  |  |  |  |  |
| EK03UPICSA |  | 03U Plant Layout Model - Caustic Sewer | 10d | 2005-10-21 A | 2005-11-07 A | EK030SY050 | 100% | 2005-10-31 | 2005-11-11 |  |  |  | 2006-07-29 | 0 | 0 | 03 | EK | U20 | 03U | PI | P02 | U |  | E | E2B2 |  |  |  | 1 | 1 | 16 | EK02UPICBA | X | CS |  |  |  |  |  |  |
| EK03CPI030 |  | 03C Conceptual Layout - Supersketches | 5d | 2005-10-24 A | 2005-10-28 A | EK020PI010 SS+5d, EK030SY030, EK030SY020 | 100% | 2005-10-31 | 2005-11-04 |  |  |  | 2006-07-29 | 0 | 0 | 03 | EK | P20 | 03C | PI | P01 | P | X | E | E2B2 | 030 | 03C | PI030 | 31 | 14 |  |  |  |  |  |  |  |  |  |  |
| EK03BPI030 |  | 03B Conceptual Layout - Supersketches | 6d | 2005-11-03 A | 2005-11-07 A | EK020PI010 SS+5d, EK030SY030, EK030SY020 | 100% | 2005-11-07 | 2005-11-14 |  |  |  | 2006-07-29 | 0 | 0 | 03 | EK | P20 | 03B | PI | P01 | P | X | E | E2B2 | 030 | 03B | PI030 | 20 | 23 |  |  |  |  |  |  |  |  |  |  |
| EK03FPI030 |  | 03F Conceptual Layout - Supersketches (Need Dwgs) | 5d | 2005-12-08 A | 2006-03-03 A | EK020PI010 SS, EK030SY030, EK030SY020, EK03FPI000 FF | 100% | 2005-12-13 | 2005-12-19 |  |  |  | 2006-07-29 | 0 | 0 | 03 | EK | P20 | 03F | PI | P01 | P |  | E | E2B2 | 030 | EK200 | PI030 | 26 | 38 |  |  |  |  |  |  |  |  |  |  |
| EK030PI012 |  | Plot Plan - Utility Plant Issue IPL | 30d | 2005-12-29 A | 2006-01-20 A | EK030PI011, PK000MD46J FF+5d, PK000MU22J FF+5d, PK000MU31J SS+5d, PK000MU33J FF+5d, PK000MU41J FF+5d | 100% | 2006-02-27 | 2006-04-07 |  |  |  | 2006-07-29 | 0 | 0 | 03 | EK | P10 | 030 | PI | P17 | P |  | E | E2B2 |  |  |  |  |  |  |  |  |  |  |  |  |  |  |  |
| EK03EPI030 |  | 03E Conceptual Layout - Supersketches | 25d | 2006-01-16 A | 2006-05-01 A | EK020PI010 SS+5d, EK030SY030, EK030SY020, EK030PI010 SS+30d, PK000MU33N FF+15d | 100% | 2006-01-16 | 2006-02-17 |  |  |  | 2006-07-29 | 0.2 | 4.1 | 03 | EK | P20 | 03E | PI | P01 | P | CD | E | E2B2 | 030 | 03E | PI030 | 35 | 33 |  |  |  |  | 80 | 95 | 120 | 80 |  |  |
| EK03DPI050 |  | 03D Model Comment Resolution Approval | 3d | 2006-03-20 A | 2006-04-05 A | EM03DPI120, EM03DPI133 | 100% | 2006-03-20 | 2006-03-22 |  |  |  | 2006-07-29 | 0 | 0 | 03 | EK | P50 | 03D | PI | P06 | P |  | E | E2B2 | 050 | 03D | PI050 | 12 | 32 |  |  |  |  |  |  |  |  |  |  |
| EK03CPI050 |  | 03C Model Comment Resolution Approval | 3d | 2006-04-04 A | 2006-04-06 A | EM03CPI120, EM03CPI133 | 100% |  |  |  |  |  | 2006-07-29 | 0 | 0 | 03 | EK | P50 | 03C | PI | P06 | P |  | E | E2B2 | 050 | 03C | PI050 | 31 | 14 |  |  |  |  |  |  |  |  |  |  |
| EK03API050 |  | 03A Model Comment Resolution Approval | 3d | 2006-06-05 A | 2006-07-24 A | EM03API120, EM03API133 | 100% | 2006-06-15 | 2006-06-19 |  |  |  | 2006-07-29 | 0 | 0 | 03 | EK | P50 | 03A | PI | P06 | P |  | E | E2B2 | 050 | 03A | PI050 | 25 | 13 |  |  |  |  |  |  |  |  | Manpwr. Issues. |  |
| EK03BPI050 |  | 03B Model Comment Resolution Approval | 3d | 2006-06-12 A | 2006-07-20 A | EM03BPI133 | 100% | 2006-06-12 | 2006-06-14 |  |  |  | 2006-07-29 | 0 | 0 | 03 | EK | P50 | 03B | PI | P06 | P |  | E | E2B2 | 050 | 03B | PI050 | 20 | 23 |  |  |  |  |  |  |  |  |  |  |
| EM03YPI021 |  | 03Y Model Review Comment Resolution | 3d | 2006-06-14 A | 2006-07-14 A | EM03YPI130 | 100% | 2006-06-15 | 2006-06-19 |  |  |  | 2006-07-29 | 0 | 1.7 | 03 | EK | P50 | 03Y | PI | P04 | P |  | E |  |  |  |  |  |  |  |  |  |  | 2 | 3 | 5 |  |  |  |
| EK03CPI143 |  | 03C OP's & Serv. Model Comment Resolution Approval | 5d | 2006-06-15 A | 2006-06-26 A | EM03CPI136 | 100% | 2006-06-19 | 2006-06-23 |  |  | EBWK 5 Day MEC Holidays | 2006-07-29 | 0 | 0 | 03 | EK | P20 | 03C | PI | P12 | P |  | E | E5B5 | 130 | 03C | PI130 | 31 | 14 |  |  |  |  |  |  |  |  |  |  |
| EK03EPI050 |  | 03E Model Comment Resolution Approval | 3d | 2006-07-24 A | 2006-08-23 A | EM03EPI133 | 100% | 2006-07-17 | 2006-07-19 |  |  |  | 2006-07-29 | 6.4 | 0 | 03 | EK | P50 | 03E | PI | P06 | P |  | E | E2B2 | 050 | 03E | PI050 | 35 | 33 |  |  |  |  | 2 | 3 | 4 |  |  |  |
| EK03YPI050 |  | 03Y Model Comment Resolution Approval | 2d | 2006-07-24 A | 2006-07-28 A | EM03YPI133 | 100% | 2006-07-24 | 2006-07-25 |  |  |  | 2006-07-29 | 0 | 1.7 | 03 | EK | P50 | 03Y | PI | P06 | P |  | E | E2B2 | 050 | 03Y | PI050 | 13 | 12 |  |  |  |  | 1 | 2 | 3 |  |  |  |
| EK03FPI050 |  | 03F Model Comment Resolution Approval | 3d | 2006-07-28 A | 2006-07-31 A | EM03FPI133 | 100% | 2006-08-07 | 2006-08-09 |  |  |  | 2006-07-29 | 0 | 0 | 03 | EK | P50 | 03F | PI | P06 | P |  | E | E2B2 | 050 | EK200 | PI050 | 26 | 38 |  |  |  |  |  |  |  |  |  |  |
| EK03DPI145 |  | 03D OP's & Serv. Model Comments Resolution Approval | 3d | 2006-08-18 A | 2006-08-18 A | EM03DPI136 FF | 100% | 2006-08-21 | 2006-08-23 |  |  | EBWK 5 Day MEC Holidays | 2006-07-29 | 0 | 0 | 03 | EK | P20 | 03D | PI | P12 | P |  | E | E5B5 | 134 | 01A | PI134 | 30 | 27 |  |  |  |  |  |  |  |  |  |  |
| EK03BPI143 |  | 03B OP's & Serv. Model Comment Resolution Approval | 5d | 2006-09-01 A | 2006-09-07 A | EM03BPI136 FF | 100% |  |  |  |  | EBWK 5 Day MEC Holidays | 2006-07-29 | 0 | 0 | 03 | EK | P20 | 03B | PI | P12 | P |  | E | E5B5 | 130 | 03B | PI130 | 20 | 23 |  |  |  |  |  |  |  |  |  |  |
| EK03FPI144 |  | 03F OP's & Serv. Model Comment Resolution Approval | 17d | 2006-09-11 A | 2006-09-25 A | EM03FPI136 FF | 100% | 2006-09-14 | 2006-10-06 |  |  | EBWK 5 Day MEC Holidays | 2006-07-29 | 0 | 0 | 03 | EK | P20 | 03F | PI | P12 | P |  | E | E5B5 | 130 | EM200 | PI130 | 26 | 38 |  |  |  |  |  |  |  |  |  |  |
| EK03YPI144 |  | 03Y OP's & Serv. Model Comments Resolution Approval | 2d | 2006-09-11 A | 2006-09-25 A | EM03YPI136 FF | 100% | 2006-09-11 | 2006-09-12 |  |  | EBWK 5 Day MEC Holidays | 2006-07-29 | 0 | 0 | 03 | EK | P20 | 03Y | PI | P12 | P |  | E | E5B5 | 134 | 01A | PI134 | 30 | 27 |  |  |  |  |  |  |  |  |  |  |
| EK03API143 |  | 03A OP's & Serv. Model Comment Resolution Approval | 5d | 2006-09-12 A | 2006-09-14 A | EM03API136 | 100% | 2006-09-15 | 2006-09-21 |  |  | EBWK 5 Day MEC Holidays | 2006-07-29 | 0 | 0 | 03 | EK | P20 | 03A | PI | P12 | P |  | E | E5B5 | 130 | 03A | PI130 | 25 | 13 |  |  |  |  |  |  |  |  |  |  |
| EK05API144 |  | 05A OP's & Serv. Model Comments Resolution Approval | 2d | 2006-09-29 A | 2006-11-27 A | EM05API136 FF | 100% | 2006-09-29 | 2006-10-02 |  |  | EBWK 5 Day MEC Holidays | 2006-07-29 | 0 | 0 | 03 | EK | P20 | 05A | PI | P12 | P |  | E | E5B5 | 134 | 01A | PI134 | 30 | 27 |  |  |  |  |  |  |  |  | MEC 1st Round |  |
| EK03EPI144 |  | 03E OP's & Serv. Model Comment Resolution Approval | 5d | 2006-10-11 A | 2006-12-20 A | EM03EPI136 FF | 100% | 2006-10-11 | 2006-10-18 |  |  | EBWK 5 Day MEC Holidays | 2006-07-29 | 6.6 | 4.2 | 03 | EK | P20 | 03E | PI | P12 | P |  | E | E5B5 | 130 | 03E | PI130 | 35 | 33 |  |  |  |  | 5 | 5 | 10 |  |  |  |
| EK035BI145 |  | 05B OP's & Serv. Model Comments Resolution Approval | 3d | 2007-03-13 | 2007-03-15 | EM05BPI136 |  |  |  | 75d | 0d | EBWK 5 Day MEC Holidays | 2006-07-29 | 0 | 1.3 | 03 | EK | P20 | 05B | PI | P12 | P |  | E | E5B5 | 134 | 01A | PI134 | 30 | 27 |  |  |  |  | 2 | 5 | 10 |  |  | 05A |

Notes:
- EK030PI005: P3 Activity Log Info: IFI Planned 08 April 05 / ADD ICA ISSUE

| ID | WBS | Activity | Type | Duration | Start | Finish | Predecessors | Complete | Planned start | Planned finish | Constraint | zData Date | PCA Criticality Index | PCA Duration Sensitivity | EB02 - UNIT | EB01 - RESP | EB06 - WORK OP | EB03 - AREA | EB05 - DISCIPLINE | EB10 - KEY | EB04 - CLASS | EB11 - FLAG | EB00 - EPC | EB17 - Suffix | EB07 - REQN | EB09 - IPMS | Sequence | User Defined Field 1 | User Definer Field 2 | EB15 - Civil / U/G Path of Construction | EB16 - Piping Path of Construction | Optimistic Duration | Most Likely Duration | Pessimistic Duration | EB21 - Rev 2 Risk Associations |
| --- | --- | --- | --- | --- | --- | --- | --- | --- | --- | --- | --- | --- | --- | --- | --- | --- | --- | --- | --- | --- | --- | --- | --- | --- | --- | --- | --- | --- | --- | --- | --- | --- | --- | --- | --- |
|  | PR | **Process Engineering** |  |  |  |  |  |  |  |  |  |  |  |  |  |  |  |  |  |  |  |  |  |  |  |  |  |  |  |  |  |  |  |  |  |
|  | SE | **Safety Engineering** |  |  |  |  |  |  |  |  |  |  |  |  |  |  |  |  |  |  |  |  |  |  |  |  |  |  |  |  |  |  |  |  |  |
|  | SY | **Systems Engineering** |  |  | 2005-05-06 | 2006-01-24 |  |  |  |  |  |  |  |  |  |  |  |  |  |  |  |  |  |  |  |  |  |  |  |  |  |  |  |  |  |
| EK030SY020 |  | 030 Utility Plant P&ID development IDR Issue |  | 21d | 2005-05-06 A | 2005-05-26 A | EK000SY010, EK000SY060, EK010SY010, EK000SY065 SS | 100% | 2005-05-06 | 2005-06-06 |  | 2006-07-29 | 0 | 0 | 03 | EK | YP0 | 030 | SY | Y0 | Y | X | E | E2B2 |  |  |  |  |  |  |  |  |  |  |  |
| EK030SY030 |  | 030 Utility Plant P&ID IDR Meeting milestone |  | 2d | 2005-06-01 A | 2005-06-02 A | EK030SY020 FS+3d | 100% |  |  |  | 2006-07-29 | 0 | 0 | 03 | EK | YP0 | 030 | SY | Y0 | Y | X | E | E2B2 |  |  |  |  |  |  |  |  |  |  |  |
| EK030SY040 |  | 030 Utility Plant P&IDs - ICA Issue development |  | 34d | 2005-06-03 A | 2005-07-21 A | EK000SY075 FF, EK030SY030 | 100% | 2005-06-03 | 2005-07-22 |  | 2006-07-29 | 0 | 0 | 03 | EK | YP0 | 030 | SY | Y1 | Y | X | E | E2B2 |  |  |  |  |  |  |  |  |  |  |  |
| EK030SY050 |  | 030 Utility Plant P&IDs - ICA Issue Milestone | milestone | 0d | 2005-07-21 A | 2005-07-21 A | EK030SY040 FF | 100% | 2005-07-22 | 2005-07-22 |  | 2006-07-29 | 0 | 0 | 03 | EK | YP0 | 030 | SY | Y1 | Y | X | E | E2B2 |  |  |  |  |  |  |  |  |  |  |  |
| EK030SY135 |  | 030 Utility Plant CV & FE Process Data |  | 20d | 2005-07-22 A | 2005-10-07 A | EK030SY050, EK000SY065 | 100% | 2005-08-22 | 2005-09-16 |  | 2006-07-29 | 0 | 0 | 03 | EK | Y50 | 030 | SY |  | Y | X | E | E2B2 |  |  |  |  |  |  |  |  |  |  |  |
| EK030SY060 |  | 030 Utility Plant P&ID's - IPL Issue Development |  | 55d | 2005-07-25 A | 2005-12-20 A | EK030SY050, EK030SY135 FF+10d, EK030SY185 SS, EK030SY150 FF | 100% | 2005-07-25 | 2005-10-07 |  | 2006-07-29 | 0 | 0 | 03 | EK | YP0 | 030 | SY | Y2 | Y | X | E | E2B2 |  |  |  |  |  |  |  |  |  |  |  |
| EK030SY150 |  | 030 Relief Valve Calculations - Utility Plant |  | 15d | 2005-09-09 A | 2005-10-26 A | EK030SY050, EK030SY135 FF+10d | 100% | 2005-09-09 | 2005-09-30 |  | 2006-07-29 | 0 | 0 | 03 | EK | Y50 | 030 | SY |  | Y |  | E | E2B2 | PSA08 | A |  |  |  |  |  |  |  |  |  |
| EK030SY185 |  | 030 SP Item Data Sheets - Utiliy Plant |  | 10d | 2005-10-27 A | 2006-01-24 A | EK010SY050, EK030SY050, EK050SY050, EK030SY135 FF+10d, EK030SY150 | 100% | 2005-10-27 | 2005-11-09 |  | 2006-07-29 | 0 | 0 | 03 | EK | Y90 | 030 | SY |  | Y |  | E | E2B2 | PS000 |  |  |  |  |  |  |  |  |  |  |
| EK030SY155 |  | 030 Issue Requisition - PSA08 Relief Valves - Utility PLant |  | 5d | 2005-11-04 A | 2005-12-20 A | EK030SY150 | 100% | 2005-11-04 | 2005-11-11 |  | 2006-07-29 | 0 | 0 | 03 | EK | Y50 | 030 | SY |  | Y |  | E | E2B2 | PSA08 | A |  |  |  |  |  |  |  |  |  |
| EK030SY090 |  | 030 Utility Plant P&IDs IPL Issue Milestone | milestone | 0d | 2005-12-20 A | 2005-12-20 A | EK030SY060 FF | 100% | 2005-12-30 | 2005-12-30 |  | 2006-07-29 | 0 | 0 | 03 | EK | YP0 | 030 | SY | Y2 | Y | X | E | E2B2 |  |  |  |  |  |  |  |  |  |  |  |
| EK03ASY170 |  | 03A OSBL P&IDs IPL & Line List Issue Milestone | milestone | 0d | 2005-12-20 A | 2005-12-20 A | EK030SY090 FF | 100% | 2005-12-30 | 2005-12-30 |  | 2006-07-29 | 0 | 0 | 03 | EK | YP0 | 03A | SY | Y2 | Y |  | E | E2B2 |  |  | 170 | 03A | SY170 | 25 | 13 |  |  |  |  |
| EK03BSY170 |  | 03B OSBL P&IDs IPL & Line List Issue Milestone | milestone | 0d | 2005-12-20 A | 2005-12-20 A | EK030SY090 FF | 100% | 2005-12-30 | 2005-12-30 |  | 2006-07-29 | 0 | 0 | 03 | EK | YP0 | 03B | SY | Y2 | Y |  | E | E2B2 |  |  | 170 | 03B | SY170 | 20 | 23 |  |  |  |  |
| EK03CSY170 |  | 03C OSBL P&IDs IPL & Line List Issue Milestone | milestone | 0d | 2005-12-20 A | 2005-12-20 A | EK030SY090 FF | 100% | 2005-12-30 | 2005-12-30 |  | 2006-07-29 | 0 | 0 | 03 | EK | YP0 | 03C | SY | Y2 | Y |  | E | E2B2 |  |  | 170 | 03C | SY170 | 31 | 14 |  |  |  |  |
| EK03DSY170 |  | 03D OSBL P&IDs IPL & Line List Issue Milestone | milestone | 0d | 2005-12-20 A | 2005-12-20 A | EK030SY090 FF | 100% | 2005-12-30 | 2005-12-30 |  | 2006-07-29 | 0 | 0 | 03 | EK | YP0 | 03D | SY | Y2 | Y |  | E | E2B2 |  |  | 170 | 03D | SY170 | 12 | 32 |  |  |  |  |
| EK03ESY170 |  | 03E OSBL P&IDs IPL & Line List Issue Milestone | milestone | 0d | 2005-12-20 A | 2005-12-20 A | EK030SY090 FF | 100% | 2005-12-30 | 2005-12-30 |  | 2006-07-29 | 0 | 0 | 03 | EK | YP0 | 03E | SY | Y2 | Y |  | E | E2B2 |  |  | 170 | 03E | SY170 | 35 | 33 |  |  |  |  |
| EK03FSY170 |  | 03F OSBL P&IDs IPL & Line List Issue Milestone | milestone | 0d | 2005-12-20 A | 2005-12-20 A | EK030SY090 FF+15d | 100% | 2006-02-21 | 2006-02-21 |  | 2006-07-29 | 0 | 0 | 03 | EK | YP0 | 03F | SY | Y2 | Y | X | E | E2B2 |  |  | 170 | EK200 | SY170 | 26 | 38 |  |  |  |  |
| EK03YSY170 |  | 03Y OSBL P&IDs IPL & Line List Issue Milestone | milestone | 0d | 2005-12-20 A | 2005-12-20 A | EK030SY090 FF | 100% | 2005-12-30 | 2005-12-30 |  | 2006-07-29 | 0 | 0 | 03 | EK | YP0 | 03Y | SY | Y2 | Y |  | E | E2B2 |  |  | 170 | 03Y | SY170 | 13 | 12 |  |  |  |  |
|  | 04 | **Corridor** |  |  | 2005-10-28 | 2006-11-14 |  |  |  |  |  |  |  |  |  |  |  |  |  |  |  |  |  |  |  |  |  |  |  |  |  |  |  |  |  |
|  | AR | **Architecture Engineering** |  |  |  |  |  |  |  |  |  |  |  |  |  |  |  |  |  |  |  |  |  |  |  |  |  |  |  |  |  |  |  |  |  |
|  | PE | **Project Engineering** |  |  |  |  |  |  |  |  |  |  |  |  |  |  |  |  |  |  |  |  |  |  |  |  |  |  |  |  |  |  |  |  |  |
|  | PS | **Planning & Scheduling** |  |  |  |  |  |  |  |  |  |  |  |  |  |  |  |  |  |  |  |  |  |  |  |  |  |  |  |  |  |  |  |  |  |
|  | QM | **Quality Mgmt.** |  |  |  |  |  |  |  |  |  |  |  |  |  |  |  |  |  |  |  |  |  |  |  |  |  |  |  |  |  |  |  |  |  |
|  | CE | **Chief Engineering** |  |  |  |  |  |  |  |  |  |  |  |  |  |  |  |  |  |  |  |  |  |  |  |  |  |  |  |  |  |  |  |  |  |
|  | CV | **Civil Engineering** |  |  |  |  |  |  |  |  |  |  |  |  |  |  |  |  |  |  |  |  |  |  |  |  |  |  |  |  |  |  |  |  |  |
|  | EL | **Electrical Engineering** |  |  |  |  |  |  |  |  |  |  |  |  |  |  |  |  |  |  |  |  |  |  |  |  |  |  |  |  |  |  |  |  |  |
|  | EV | **Environmental Engineering** |  |  |  |  |  |  |  |  |  |  |  |  |  |  |  |  |  |  |  |  |  |  |  |  |  |  |  |  |  |  |  |  |  |
|  | FP | **Fire Protection Engineering** |  |  |  |  |  |  |  |  |  |  |  |  |  |  |  |  |  |  |  |  |  |  |  |  |  |  |  |  |  |  |  |  |  |
|  | GE | **General Engineering (All Disciplines)** |  |  |  |  |  |  |  |  |  |  |  |  |  |  |  |  |  |  |  |  |  |  |  |  |  |  |  |  |  |  |  |  |  |
|  | IC | **Control Sytems Engineering** |  |  | 2006-02-01 | 2006-11-14 |  |  |  |  |  |  |  |  |  |  |  |  |  |  |  |  |  |  |  |  |  |  |  |  |  |  |  |  |  |
| EK04AIC300 |  | 04A In Line Instrument Approved Vendor Data |  | 20d | 2006-02-01 A | 2006-05-15 A | EK03AIC300 SS | 100% | 2005-11-03 | 2005-11-30 |  | 2006-07-29 | 0 | 2 | 04 | EK | I00 | 04A | IC |  | I |  | E |  |  |  |  |  |  |  |  | 43 | 44 | 50 | 06 |
| EK04AIC120 |  | 04A Instrument Detail Model / Review |  | 25d | 2006-10-23 A | 2006-11-14 A | EM04API134 FF | 100% | 2006-10-23 | 2006-11-24 | start on or before 2006-10-23 | 2006-07-29 | 0 | 5.4 | 04 | EK | ID1 | 04A | IC |  | I | X | E | E5B5 |  |  | 120 | 04A | IC120 | 27 | 4 | 24 | 25 | 30 | 05A |

| ID | WBS | Activity | Type | Duration | Start | Finish | Predecessors | Complete | Remaining | Planned start | Planned finish | Total float | Free float | Expected finish | Calendar | zData Date | Optimistic Duration | Most Likely Duration | Pessimistic Duration | Sequence | PCA Criticality Index | PCA Duration Sensitivity | User Defined Field 1 | User Definer Field 2 | user_integer1 | EB02 - UNIT | EB01 - RESP | EB06 - WORK OP | EB03 - AREA | EB05 - DISCIPLINE | EB10 - KEY | EB04 - CLASS | EB11 - FLAG | EB00 - EPC | EB15 - Civil / U/G Path of Construction | EB16 - Piping Path of Construction | EB17 - Suffix | EB21 - Rev 2 Risk Associations | EB07 - REQN | user_integer2 |
| --- | --- | --- | --- | --- | --- | --- | --- | --- | --- | --- | --- | --- | --- | --- | --- | --- | --- | --- | --- | --- | --- | --- | --- | --- | --- | --- | --- | --- | --- | --- | --- | --- | --- | --- | --- | --- | --- | --- | --- | --- |
|  | MB | **Furnaces & Flares Engineering** |  |  |  |  |  |  |  |  |  |  |  |  |  |  |  |  |  |  |  |  |  |  |  |  |  |  |  |  |  |  |  |  |  |  |  |  |  |  |
|  | MC | **Exchangers Engineering** |  |  |  |  |  |  |  |  |  |  |  |  |  |  |  |  |  |  |  |  |  |  |  |  |  |  |  |  |  |  |  |  |  |  |  |  |  |  |
|  | MD | **Vessels Engineering** |  |  |  |  |  |  |  |  |  |  |  |  |  |  |  |  |  |  |  |  |  |  |  |  |  |  |  |  |  |  |  |  |  |  |  |  |  |  |
|  | MJ | **Machinery Engineering** |  |  |  |  |  |  |  |  |  |  |  |  |  |  |  |  |  |  |  |  |  |  |  |  |  |  |  |  |  |  |  |  |  |  |  |  |  |  |
|  | PI | **Piping Engineering** |  |  | 2005-10-28 | 2006-09-25 |  |  |  |  |  |  |  |  |  |  |  |  |  |  |  |  |  |  |  |  |  |  |  |  |  |  |  |  |  |  |  |  |  |  |
| EK04API030 |  | 04A Conceptual Layout - Supersketches |  | 10d | 2005-10-28 A | 2006-09-25 A | EK010PI010 SS+20d, XE000OW300 FF+4d | 100% |  | 2005-10-31 | 2005-11-11 |  |  |  |  | 2006-07-29 | 40 | 60 | 120 | 030 | 0.8 | 2.9 | 04A | PI030 | 25 | 04 | EK | P20 | 04A | PI | P01 | P | CD | E | 28 | 41 | E2B2 | 05A |  |  |
|  | PR | **Process Engineering** |  |  |  |  |  |  |  |  |  |  |  |  |  |  |  |  |  |  |  |  |  |  |  |  |  |  |  |  |  |  |  |  |  |  |  |  |  |  |
|  | SE | **Safety Engineering** |  |  |  |  |  |  |  |  |  |  |  |  |  |  |  |  |  |  |  |  |  |  |  |  |  |  |  |  |  |  |  |  |  |  |  |  |  |  |
|  | SY | **Systems Engineering** |  |  | 2005-11-11 | 2005-11-11 |  |  |  |  |  |  |  |  |  |  |  |  |  |  |  |  |  |  |  |  |  |  |  |  |  |  |  |  |  |  |  |  |  |  |
| EK04ASY170 |  | 04A OSBL P&IDs IPL & Line List Issue Milestone | milestone | 0d | 2005-11-11 A | 2005-11-11 A | EK050SY090 FF | 100% |  | 2005-12-09 | 2005-12-09 |  |  |  |  | 2006-07-29 |  |  |  | 170 | 0 | 0 | 04A | SY170 |  | 04 | EK | YP0 | 04A | SY | Y2 | Y |  | E | 27 | 4 | E2B2 | 05A |  |  |
|  | 05 | **Dock / Storage** |  |  | 2005-03-14 | 2007-03-01 |  |  |  |  |  |  |  |  |  |  |  |  |  |  |  |  |  |  |  |  |  |  |  |  |  |  |  |  |  |  |  |  |  |  |
|  | AR | **Architecture Engineering** |  |  |  |  |  |  |  |  |  |  |  |  |  |  |  |  |  |  |  |  |  |  |  |  |  |  |  |  |  |  |  |  |  |  |  |  |  |  |
|  | PE | **Project Engineering** |  |  |  |  |  |  |  |  |  |  |  |  |  |  |  |  |  |  |  |  |  |  |  |  |  |  |  |  |  |  |  |  |  |  |  |  |  |  |
|  | PS | **Planning & Scheduling** |  |  |  |  |  |  |  |  |  |  |  |  |  |  |  |  |  |  |  |  |  |  |  |  |  |  |  |  |  |  |  |  |  |  |  |  |  |  |
|  | QM | **Quality Mgmt.** |  |  |  |  |  |  |  |  |  |  |  |  |  |  |  |  |  |  |  |  |  |  |  |  |  |  |  |  |  |  |  |  |  |  |  |  |  |  |
|  | CE | **Chief Engineering** |  |  |  |  |  |  |  |  |  |  |  |  |  |  |  |  |  |  |  |  |  |  |  |  |  |  |  |  |  |  |  |  |  |  |  |  |  |  |
|  | CV | **Civil Engineering** |  |  | 2006-08-25 | 2007-02-09 |  |  |  |  |  |  |  |  |  |  |  |  |  |  |  |  |  |  |  |  |  |  |  |  |  |  |  |  |  |  |  |  |  |  |
| EK000CV146 |  | Receive Site Survey Data Areas 04 & 05 | milestone | 0d | 2006-08-25 A | 2006-08-25 A | EK000CV140 FS+60d | 100% |  | 2006-09-04 | 2006-09-04 |  |  |  |  | 2006-07-29 |  |  |  |  | 0 | 0 |  |  |  | 05 | EK | G10 | 000 | CV |  | C | X | E |  |  |  |  | Found |  |
| EK05ACV200 |  | 05A Redesign Piling & Ammonia Tank Foundations |  | 50d | 2006-12-04 A | 2007-02-09 | EK000EB015 | 80% | 10d | 2007-01-15 | 2007-03-23 | -44d | 0d | 2007-02-09 |  | 2006-07-29 |  |  |  | 160 | 0 | 0 | 05A | C0160 |  | 05 | EK | C30 | 05A | CV | T | C |  | E |  |  |  |  |  | 24 |
|  | EL | **Electrical Engineering** |  |  | 2005-03-14 | 2007-03-01 |  |  |  |  |  |  |  |  |  |  |  |  |  |  |  |  |  |  |  |  |  |  |  |  |  |  |  |  |  |  |  |  |  |  |
| EK05BEL150 |  | Switchgear One line diagrams - ICA Dock |  | 80d | 2005-03-14 A | 2005-12-15 A | EK000YA002 SS+15d | 100% |  | 2005-03-14 | 2005-07-06 |  |  |  |  | 2006-07-29 |  |  |  |  | 0 | 0 |  |  |  | 05 | EK | EA2 | 05B | EL |  | E | X | E | 38 | 40 | E2B2 | 05A |  |  |
| EK05BEL170 |  | MCC One line diagrams - ICA Dock |  | 80d | 2005-03-14 A | 2005-12-23 A | EK020PI011 SS, EK010PI011 FF+10d, EK000YA002 SS+15d, EK050PI011 FF+20d, PK000MJ73I FF+30d | 100% |  | 2005-03-14 | 2005-07-06 |  |  |  |  | 2006-07-29 |  |  |  |  | 0 | 0 |  |  |  | 05 | EK | EA3 | 05B | EL |  | E | X | E | 38 | 40 | E2B2 | 05A |  |  |
| EK05BEL175 |  | Client Review of MCC Oneline Diagrams |  | 10d | 2005-12-12 A | 2005-12-23 A | EK05BEL170 | 100% |  | 2006-01-06 | 2006-01-19 |  |  |  |  | 2006-07-29 |  |  |  |  | 0 | 0 |  |  |  | 05 | EK | EA3 | 05B | EL |  | E | X | E | 38 | 40 | E2B2 | 05A |  |  |
| EK05BEL155 |  | Client Review of Switchgear Oneline Diagrams |  | 10d | 2005-12-15 A | 2005-12-23 A | EK05BEL150 | 100% |  | 2005-12-16 | 2005-12-30 |  |  |  |  | 2006-07-29 |  |  |  |  | 0 | 0 |  |  |  | 05 | EK | EA2 | 05B | EL |  | E | X | E | 38 | 40 | E2B2 | 05A |  |  |
| EK05BELED0 |  | Substation Building Layout |  | 1d | 2006-01-28 A | 2006-01-30 A | EK020EL045 | 100% |  | 2006-01-30 | 2006-01-30 |  |  |  | EBWK - Global | 2006-07-29 |  |  |  |  | 0 | 0 |  |  |  | 05 | EK | ED0 | 05B | EL |  | E | WE | E | 38 | 40 | E2B2 | 05A |  |  |
| EK05BEL160 |  | Switchgear One line Diagrams - IFD |  | 50d | 2006-05-04 A | 2006-09-08 A | EK05BEL155, EM000ELEL2 FF+10d | 100% |  | 2006-05-04 | 2006-07-12 |  |  |  |  | 2006-07-29 | 40 | 45 | 50 |  | 0 | 0 |  |  |  | 05 | EK | EA2 | 05B | EL |  | E | X | E | 38 | 40 | E2B2 | 05A |  |  |
| EK05BEL180 |  | MCC One line Diagrams - IFD |  | 50d | 2006-05-04 A | 2006-09-08 A | EK05BEL175, EK020EL040 FF+10d, EK05BEL160 SS | 100% |  | 2006-05-04 | 2006-07-12 |  |  |  |  | 2006-07-29 | 40 | 45 | 50 |  | 0 | 0 |  |  |  | 05 | EK | EA3 | 05B | EL |  | E | X | E | 38 | 40 | E2B2 | 05A |  |  |
| EK05BEL165 |  | Switchgear One line Diagrams - IFC |  | 16d | 2007-02-26 | 2007-03-01 | EK05BEL160, PK000E001M FF+20d, PK000E002M FF+20d, PK000E004M FF+20d, EM05BPI132 |  |  | 2007-02-26 | 2007-03-19 | 276d | 0d |  |  | 2006-07-29 | 40 | 45 | 50 |  | 0 | 2.8 |  |  |  | 05 | EK | EA2 | 05B | EL | E1 | E | PS | E | 38 | 40 | E2B2 | 05A |  |  |
| EK05BEL185 |  | MCC One line Diagrams - IFC |  | 16d | 2007-02-26 | 2007-03-01 | EK05BEL180, EK05BEL165 FF, EM05BPI132, EK020ELEN1 FF, EK020ELEN2 SS |  |  | 2007-02-26 | 2007-03-19 | 286d | 164d |  |  | 2006-07-29 | 40 | 45 | 50 |  | 0 | 1.6 |  |  |  | 05 | EK | EA3 | 05B | EL | E1 | E | PS | E | 38 | 40 | E2B2 | 05A |  |  |

| ID | WBS | Activity | Duration | Start | Finish | Predecessors | Complete | Remaining | Planned start | Planned finish | Total float | Free float | Constraint | Expected finish | Calendar | zData Date | PCA Criticality Index | PCA Duration Sensitivity | EB02 - UNIT | EB01 - RESP | EB06 - WORK OP | EB03 - AREA | EB05 - DISCIPLINE | EB07 - REQN | EB10 - KEY | EB04 - CLASS | EB11 - FLAG | EB00 - EPC | EB17 - Suffix | EB09 - IPMS | Optimistic Duration | Most Likely Duration | Pessimistic Duration | EB21 - Rev 2 Risk Associations | Sequence | User Defined Field 1 | User Definer Field 2 | EB15 - Civil / U/G Path of Construction | EB16 - Piping Path of Construction | EB08 - TAG | user_text1 | user_integer2 | EB14 - RISK | user_integer1 |
| --- | --- | --- | --- | --- | --- | --- | --- | --- | --- | --- | --- | --- | --- | --- | --- | --- | --- | --- | --- | --- | --- | --- | --- | --- | --- | --- | --- | --- | --- | --- | --- | --- | --- | --- | --- | --- | --- | --- | --- | --- | --- | --- | --- | --- |
|  | EV | **Environmental Engineering** |  |  |  |  |  |  |  |  |  |  |  |  |  |  |  |  |  |  |  |  |  |  |  |  |  |  |  |  |  |  |  |  |  |  |  |  |  |  |  |  |  |  |
|  | FP | **Fire Protection Engineering** |  |  |  |  |  |  |  |  |  |  |  |  |  |  |  |  |  |  |  |  |  |  |  |  |  |  |  |  |  |  |  |  |  |  |  |  |  |  |  |  |  |  |
|  | GE | **General Engineering (All Disciplines)** |  |  |  |  |  |  |  |  |  |  |  |  |  |  |  |  |  |  |  |  |  |  |  |  |  |  |  |  |  |  |  |  |  |  |  |  |  |  |  |  |  |  |
|  | IC | **Control Sytems Engineering** |  | 2005-11-03 | 2007-01-29 |  |  |  |  |  |  |  |  |  |  |  |  |  |  |  |  |  |  |  |  |  |  |  |  |  |  |  |  |  |  |  |  |  |  |  |  |  |  |  |
| EK050I1100 |  | 050 Orific Plates - D/S Dock/Storage Area | 15d | 2005-11-03 A | 2005-12-05 A | EK050SY135, EK010I1100 FF | 100% |  | 2005-11-03 | 2005-11-23 |  |  |  |  |  | 2006-07-29 | 0 | 0 | 05 | EK | I21 | 050 | IC | I2110 | IR | I | N | E | E2B2 |  |  |  |  |  |  |  |  |  |  |  |  |  |  |  |
| EK050I1105 |  | 050 Orific Plates - Purchase ERW Dock/Storage Area | 5d | 2006-01-30 A | 2006-04-11 A | EK050I1100 | 100% |  | 2006-01-30 | 2006-02-03 |  |  |  |  |  | 2006-07-29 | 0 | 0 | 05 | EK | I21 | 050 | IC | I2110 | IR | I | N | E | E2B2 | F |  |  |  |  |  |  |  |  |  |  |  |  |  |  |
| EK05AIC300 |  | 05A In Line Instrument Approved Vendor Data | 20d | 2006-02-01 A | 2006-06-28 A | EK030IC210, EK030I1100 | 100% |  | 2005-11-03 | 2005-11-30 |  |  |  |  |  | 2006-07-29 | 0 | 3.5 | 05 | EK | I00 | 05A | IC |  |  | I |  | E |  |  | 89 | 93 | 95 | 06 |  |  |  |  |  |  |  |  |  |  |
| EK05BIC300 |  | 05B In Line Instrument Approved Vendor Data | 20d | 2006-02-01 A | 2006-06-19 A | EK030IC210, EK030I1100 | 100% |  | 2005-11-03 | 2005-11-30 |  |  |  |  |  | 2006-07-29 | 0 | 0 | 05 | EK | I00 | 05B | IC |  |  | I |  | E |  |  | 75 | 79 | 83 | 06 |  |  |  |  |  |  |  |  |  |  |
| EK05AIC120 |  | 05A Instrument Detail Model / Review | 60d | 2006-05-22 A | 2006-09-21 A | EM05API134 FF | 100% |  | 2006-05-22 | 2006-08-11 |  |  |  |  |  | 2006-07-29 | 0 | 0 | 05 | EK | ID1 | 05A | IC |  |  | I |  | E | E5B5 |  |  |  |  |  | 120 | 05A | IC120 | 15 | 29 |  |  |  |  |  |
| EK05BIC120 |  | 05B Instrument Model | 45d | 2007-01-05 A | 2007-01-29 | EM05BPI120 SS | 100% | 0d | 2007-01-05 | 2007-03-08 | 110d | 0d | start on or after 2006-12-04 | 2007-01-26 |  | 2006-07-29 | 0 | 0 | 05 | EK | ID1 | 05B | IC |  |  | I |  | E | E5B5 |  | 24 | 25 | 30 | 05A | 120 | 05B | IC120 | 38 | 40 |  |  |  |  |  |
|  | MB | **Furnaces & Flares Engineering** |  | 2006-05-01 | 2006-06-26 |  |  |  |  |  |  |  |  |  |  |  |  |  |  |  |  |  |  |  |  |  |  |  |  |  |  |  |  |  |  |  |  |  |  |  |  |  |  |  |
| PK05AMB46 |  | 05A MB710 2202-B/BL - Piping Prod. V. Data | 35d | 2006-05-01 A | 2006-06-26 A | PK000MB71J | 100% |  | 2006-05-01 | 2006-06-16 |  |  |  |  | EBWK - Global | 2006-07-29 | 0 | 0 | 05 | EK | MB7 | 05A | MB | MB710 |  | M |  | E |  | M |  |  |  |  |  |  |  |  |  | X |  |  |  |  |
| PK05AMB47 |  | 05A MB710 2202-B/BL - Civil Prod. V. Data | 35d | 2006-05-01 A | 2006-06-26 A | PK000MB71J | 100% |  | 2006-05-01 | 2006-06-16 |  |  |  |  | EBWK - Global | 2006-07-29 | 0 | 0 | 05 | EK | MB7 | 05A | MB | MB710 |  | M |  | E |  | M |  |  |  |  |  |  |  |  |  | X |  |  |  |  |
| PK05AMB48 |  | 05A MB710 2202-B/BL - E&I Prod. V. Data | 35d | 2006-05-01 A | 2006-06-26 A | PK000MB71J | 100% |  | 2006-05-01 | 2006-06-16 |  |  |  |  | EBWK - Global | 2006-07-29 | 0 | 0 | 05 | EK | MB7 | 05A | MB | MB710 |  | M |  | E |  | M |  |  |  |  |  |  |  |  |  | X |  |  |  |  |
|  | MC | **Exchangers Engineering** |  |  |  |  |  |  |  |  |  |  |  |  |  |  |  |  |  |  |  |  |  |  |  |  |  |  |  |  |  |  |  |  |  |  |  |  |  |  |  |  |  |  |
|  | MD | **Vessels Engineering** |  | 2005-04-26 | 2006-09-15 |  |  |  |  |  |  |  |  |  |  |  |  |  |  |  |  |  |  |  |  |  |  |  |  |  |  |  |  |  |  |  |  |  |  |  |  |  |  |  |
| EK000MF32C |  | 05A MF312 2105-F Water Tank - Issue Data for Subcontract | 15d | 2005-04-26 A | 2005-05-09 A | EK000MF32A, EK000PR020, EK000PR030 | 100% |  | 2005-04-26 | 2005-05-16 |  |  |  |  |  | 2006-07-29 | 0 | 0 | 05 | EK | MF3 | 05A | MD | MF312 | FE | M | X | E |  | A |  |  |  |  |  |  |  |  |  | 2105F |  |  |  |  |
| PK000MF32D |  | 05A MF312 2105-F Water Tank - Fdn. Vendor Data (From Subcontract) | 35d | 2006-03-13 A | 2006-04-03 A | EK000MF32C | 100% |  | 2006-03-13 | 2006-04-28 |  |  |  |  | EBWK - Global | 2006-07-29 | 0 | 0 | 05 | EK | MF3 | 05A | MD | MF312 |  | M |  | E |  | M |  |  |  |  |  |  |  |  |  | X |  |  |  |  |
| PK05AMF05 |  | 05A MF311 2101/2102-F Ammonia Storage Tanks - Foundation V. Data (Subcontract) | 35d | 2006-03-13 A | 2006-07-31 A | EK000MF33F, EK000MF32C | 100% |  | 2006-03-13 | 2006-04-28 |  |  |  |  | EBWK - Global | 2006-07-29 | 0 | 0 | 05 | EK | MF3 | 05A | MD | MF311 |  | M |  | E |  | M |  |  |  |  |  |  |  |  |  | X |  |  |  |  |
| PK05AMF33 |  | 05A MF312 2105-F - Piping Prod. V. Data (Subcontract) | 35d | 2006-03-13 A | 2006-04-03 A | EK000MF32C | 100% |  | 2006-03-13 | 2006-04-28 |  |  |  |  | EBWK - Global | 2006-07-29 | 0 | 0 | 05 | EK | MF3 | 05A | MD | MF312 |  | M |  | E |  | M |  |  |  |  |  |  |  |  |  | X |  |  |  |  |
| PK05AMF34 |  | 05A MF312 2105-F - Civil Prod. V. Data (Subcontract) | 35d | 2006-03-13 A | 2006-04-03 A | EK000MF32C | 100% |  | 2006-03-13 | 2006-04-28 |  |  |  |  | EBWK - Global | 2006-07-29 | 0 | 0 | 05 | EK | MF3 | 05A | MD | MF312 |  | M |  | E |  | M |  |  |  |  |  |  |  |  |  | X |  |  |  |  |
| PK05AMF35 |  | 05A MF312 2105-F - E&I Prod. V. Data (Subcontract) | 35d | 2006-03-13 A | 2006-04-03 A | EK000MF32C | 100% |  | 2006-03-13 | 2006-04-28 |  |  |  |  | EBWK - Global | 2006-07-29 | 0 | 0 | 05 | EK | MF3 | 05A | MD | MF312 |  | M |  | E |  | M |  |  |  |  |  |  |  |  |  | X |  |  |  |  |
| PK05AMF25 |  | 05A MF311 2101/2102-F Ammonia Storage Tanks - Prod. V. Data (Subcontract) | 35d | 2006-08-01 A | 2006-09-15 A | EK000MF33F, EK000MF32C, PK05AMF05 | 100% |  | 2006-08-14 | 2006-09-29 |  |  |  |  | EBWK - Global | 2006-07-29 | 0 | 0 | 05 | EK | MF3 | 05A | MD | MF311 |  | M |  | E |  | M |  |  |  |  |  |  |  |  |  | X |  |  |  |  |
|  | MJ | **Machinery Engineering** |  | 2005-07-01 | 2006-12-13 |  |  |  |  |  |  |  |  |  |  |  |  |  |  |  |  |  |  |  |  |  |  |  |  |  |  |  |  |  |  |  |  |  |  |  |  |  |  |  |
| PK000MJ37Q |  | Prepare & Issue Prelim. RFQ - MJ307 to Proc. | 10d | 2005-07-01 A | 2005-07-13 A | EK000YA002 SS | 100% |  | 2005-03-21 | 2005-04-01 |  |  |  |  |  | 2006-07-29 | 0 | 0 | 05 | EK | MJ3 | 05A | MJ | MJ307 | CE | M | X | E |  | A |  |  |  |  |  |  |  |  |  |  |  |  |  |  |
| PK000MJ37E |  | Technical Evaluation - MJ307 | 5d | 2005-08-19 A | 2006-01-06 A | PK000MJ37D | 100% |  | 2006-01-03 | 2006-01-09 |  |  |  |  |  | 2006-07-29 | 0 | 0 | 05 | EK | MJ3 | 05A | MJ | MJ307 | CE | M | X | E |  | D |  |  |  |  |  |  |  |  |  |  |  |  |  |  |
| PK05AMJ154 |  | 05A Recv. Planning V. Data - Pumps 2106/7-J | 1d | 2005-10-17 A | 2005-10-17 A | PK000MJ36N | 100% |  |  |  |  |  |  |  |  | 2006-07-29 | 0 | 0 | 05 | EK | MJ3 | 05A | MJ | P2030 | P15 | M |  | E | E2B2 | J |  |  |  |  | 154 | 05A | MJ154 | 15 | 29 |  |  |  |  |  |
| PK05AML100 |  | 05A Recv. Planning V. Data - Special Equip. | 1d | 2005-10-31 A | 2005-10-31 A | PK000ML33N | 100% |  |  |  |  |  |  |  |  | 2006-07-29 | 0 | 0 | 05 | EK | ML3 | 05A | MJ | P2030 | P15 | M |  | E | E2B2 | J |  |  |  |  | 100 | 05A | ML100 | 15 | 29 |  |  |  |  |  |
| PK05BML100 |  | 05B Recv. Planning V. Data - Special Equip. 2102-L | 1d | 2005-10-31 A | 2005-10-31 A | PK000ML51N | 100% |  |  |  |  |  |  |  |  | 2006-07-29 | 0 | 0 | 05 | EK | ML5 | 05B | MJ | P2030 | P15 | M |  | E | E2B2 | J |  |  |  | 05A | 100 | 05B | ML100 | 38 | 40 | 2102L |  |  |  |  |
| PK05AMJV01 |  | 05A MJ305 2106-J,2107-J - Piping Prod. V. Data | 35d | 2006-01-30 A | 2006-04-03 A | PK000MJ36J | 100% |  | 2006-01-30 | 2006-03-17 |  |  |  |  | EBWK - Global | 2006-07-29 | 0 | 0 | 05 | EK | MJ3 | 05A | MJ | MJ305 |  | M |  | E |  | M |  |  |  |  |  |  |  |  |  | X |  |  |  |  |
| PK05AMJV02 |  | 05A MJ305 2106-J,2107-J - Civil Prod. V. Data | 35d | 2006-01-30 A | 2006-04-20 A | PK000MJ36J | 100% |  | 2006-01-30 | 2006-03-17 |  |  |  |  | EBWK - Global | 2006-07-29 | 0 | 0 | 05 | EK | MJ3 | 05A | MJ | MJ305 |  | M |  | E |  | M |  |  |  |  |  |  |  |  |  | X |  |  |  |  |
| PK05AMJV03 |  | 05A MJ305 2106-J,2107-J - E&I Prod. V. Data | 35d | 2006-01-30 A | 2006-04-21 A | PK000MJ36J | 100% |  | 2006-01-30 | 2006-03-17 |  |  |  |  | EBWK - Global | 2006-07-29 | 0 | 0 | 05 | EK | MJ3 | 05A | MJ | MJ305 |  | M |  | E |  | M |  |  |  |  |  |  |  |  |  | X |  |  |  |  |
| PK05AMLV01 |  | 05A ML330 2101-L - Piping Prod. V. Data | 35d | 2006-01-30 A | 2006-06-06 A | PK000ML33J | 100% |  | 2006-01-30 | 2006-03-17 |  |  |  |  | EBWK - Global | 2006-07-29 | 0 | 0 | 05 | EK | ML3 | 05A | MJ | ML330 |  | M |  | E |  | M |  |  |  |  |  |  |  |  |  | X |  |  |  |  |
| PK05AMLV02 |  | 05A ML330 2101-L - Civil Prod. V. Data | 35d | 2006-01-30 A | 2006-06-27 A | PK000ML33J | 100% |  | 2006-01-30 | 2006-03-17 |  |  |  |  | EBWK - Global | 2006-07-29 | 0 | 0 | 05 | EK | ML3 | 05A | MJ | ML330 |  | M |  | E |  | M |  |  |  |  |  |  |  |  |  | X |  |  |  |  |
| PK05AMLV03 |  | 05A ML330 2101-L - E&I Prod. V. Data | 35d | 2006-01-30 A | 2006-07-07 A | PK000ML33J | 100% |  | 2006-01-30 | 2006-03-17 |  |  |  |  | EBWK - Global | 2006-07-29 | 0 | 0 | 05 | EK | ML3 | 05A | MJ | ML330 |  | M |  | E |  | M |  |  |  |  |  |  |  |  |  | X | Data Recieved. An will look at. |  |  |  |
| PK05BMLV01 |  | 05B ML512 2102-L - Piping Prod. V. Data | 35d | 2006-01-30 A | 2006-04-21 A | PK000ML51J | 100% |  | 2006-01-30 | 2006-03-17 |  |  |  |  | EBWK - Global | 2006-07-29 | 0 | 0 | 05 | EK | ML5 | 05B | MJ | ML512 |  | M |  | E |  | M |  |  |  | 05A |  |  |  |  |  | X |  |  |  |  |
| PK05BMLV02 |  | 05B ML512 2102-L - Civil Prod. V. Data | 35d | 2006-01-30 A | 2006-04-21 A | PK000ML51J | 100% |  | 2006-01-30 | 2006-03-17 |  |  |  |  | EBWK - Global | 2006-07-29 | 0 | 0 | 05 | EK | ML5 | 05B | MJ | ML512 |  | M |  | E |  | M |  |  |  | 05A |  |  |  |  |  | X |  |  |  |  |
| PK05BMLV03 |  | 05B ML512 2102-L - E&I Prod. V. Data | 35d | 2006-01-30 A | 2006-05-30 A | PK000ML51J | 100% |  | 2006-01-30 | 2006-03-17 |  |  |  |  | EBWK - Global | 2006-07-29 | 0 | 0 | 05 | EK | ML5 | 05B | MJ | ML512 |  | M |  | E |  | M |  |  |  | 05A |  |  |  |  |  | X |  |  |  |  |
| PK000MJ38Q |  | Prepare & Issue Prelim. RFQ - MJ308 to Proc. | 10d | 2006-02-01 A | 2006-02-13 A | EK000YA002 SS | 100% |  | 2005-03-21 | 2005-04-01 |  |  |  |  |  | 2006-07-29 | 0 | 0 | 05 | EK | MJ3 | 05A | MJ | MJ308 | CE | M | X | E |  | A |  |  |  |  |  |  |  |  |  |  |  |  |  |  |
| PK000MJ37T |  | Recv. Planning V. Data MJ307 | 20d | 2006-02-20 A | 2006-02-23 A | PK000MJ37M | 100% |  | 2006-03-06 | 2006-03-31 |  |  |  |  |  | 2006-07-29 | 0 | 0 | 05 | EK | MJ3 | 05A | MJ | MJ307 | P15 | M |  | E |  | J |  |  |  |  |  |  |  |  |  |  |  | 20 | 10 |  |
| PK05AMJV04 |  | 05A MJ307 2100-JA/JB - Piping Prod. V. Data | 35d | 2006-02-20 A | 2006-07-12 A | PK000MJ37J, PK000MJ37T | 100% |  | 2006-03-27 | 2006-05-12 |  |  |  |  | EBWK - Global | 2006-07-29 | 0 | 0 | 05 | EK | MJ3 | 05A | MJ | MJ307 |  | M | CD | E |  | M | 70 | 80 | 110 | 06 |  |  |  |  |  | X |  |  |  | 50 |
| PK05AMJV05 |  | 05A MJ307 2100-JA/JB - Civil Prod. V. Data | 35d | 2006-02-20 A | 2006-07-12 A | PK000MJ37J, PK000MJ37T | 100% |  | 2006-03-27 | 2006-05-12 |  |  |  |  | EBWK - Global | 2006-07-29 | 0 | 0 | 05 | EK | MJ3 | 05A | MJ | MJ307 |  | M | CD | E |  | M | 70 | 80 | 110 | 06 |  |  |  |  |  | X |  |  |  | 50 |
| PK05AMJV06 |  | 05A MJ307 2100-JA/JB - E&I Prod. V. Data | 35d | 2006-02-20 A | 2006-08-08 A | PK000MJ37J, PK000MJ37T | 100% |  | 2006-03-27 | 2006-05-12 |  |  |  |  | EBWK - Global | 2006-07-29 | 0 | 0 | 05 | EK | MJ3 | 05A | MJ | MJ307 |  | M | CD | E |  | M | 70 | 80 | 110 | 06 |  |  |  |  |  | X |  |  |  | 50 |
| PK000MJ38E |  | Technical Evaluation - MJ308 | 5d | 2006-03-13 A | 2006-04-27 A | PK000MJ38D | 100% |  | 2006-03-21 | 2006-03-27 |  |  |  |  |  | 2006-07-29 | 8.3 | 3.3 | 00 | EK | MJ3 | 000 | MJ | MJ308 | CE | M | X | E |  | D | 8 | 10 | 15 | 03 |  |  |  |  |  |  |  |  |  |  |
| PK05AMLV04 |  | 05A ML501 2103-L - Piping Prod. V. Data | 35d | 2006-03-27 A | 2006-08-09 A | PK000ML52J, PK000ML52P SS | 100% |  | 2006-03-27 | 2006-05-12 |  |  |  |  | EBWK - Global | 2006-07-29 | 0 | 0 | 05 | EK | ML5 | 05A | MJ | ML501 |  | M |  | E |  | M |  |  |  |  |  |  |  |  |  | X | Recieved GA drawings. |  |  |  |
| PK05AMLV05 |  | 05A ML501 2103-L - Civil Prod. V. Data | 35d | 2006-03-27 A | 2006-08-09 A | PK000ML52J | 100% |  | 2006-03-27 | 2006-05-12 |  |  |  |  | EBWK - Global | 2006-07-29 | 0 | 0 | 05 | EK | ML5 | 05A | MJ | ML501 |  | M |  | E |  | M |  |  |  |  |  |  |  |  |  | X | Recieved GA drawings. |  |  |  |
| PK05AMLV06 |  | 05A ML501 2103-L - E&I Prod. V. Data | 35d | 2006-03-27 A | 2006-11-27 A | PK000ML52J | 100% |  | 2006-03-27 | 2006-05-12 |  |  |  |  | EBWK - Global | 2006-07-29 | 0 | 0 | 05 | EK | ML5 | 05A | MJ | ML501 |  | M |  | E |  | M |  |  |  |  |  |  |  |  |  | X | Multiple Issues outstanding |  |  |  |
| PK05BMU06 |  | 05B MU311 2109-LA/LB, 2110-L - Piping Prod. V. Data | 35d | 2006-04-14 A | 2006-05-30 A | PK000MU11N | 100% |  | 2006-04-27 | 2006-06-14 |  |  |  |  | EBWK - Global | 2006-07-29 | 0 | 3.9 | 05 | EK | MU3 | 01D | MU | MU311 |  | M |  | E |  | M | 30 | 35 | 40 | 06 |  |  |  |  |  | X |  |  |  |  |
| PK05BMU07 |  | 05B MU311 2109-LA/LB, 2110-L - Civil Prod. V. Data | 35d | 2006-04-14 A | 2006-05-30 A | PK000MU11N | 100% |  | 2006-04-27 | 2006-06-14 |  |  |  |  | EBWK - Global | 2006-07-29 | 0 | 3.9 | 05 | EK | MU3 | 01D | MU | MU311 |  | M |  | E |  | M | 30 | 35 | 40 | 06 |  |  |  |  |  | X |  |  |  |  |
| PK05AMJV07 |  | 05A MJ392 2105-JA/JB - Piping Prod. V. Data | 35d | 2006-04-17 A | 2006-06-09 A | PK000MJ39J | 100% |  | 2006-04-17 | 2006-06-02 |  |  |  |  | EBWK - Global | 2006-07-29 | 0 | 0 | 05 | EK | MJ3 | 05A | MJ | MJ392 |  | M |  | E |  | M | 40 | 40 | 50 | 06 |  |  |  |  |  | X |  |  |  |  |
| PK05AMJV08 |  | 05A MJ392 2105-JA/JB - Civil Prod. V. Data | 35d | 2006-04-17 A | 2006-06-09 A | PK000MJ39J | 100% |  | 2006-04-17 | 2006-06-02 |  |  |  |  | EBWK - Global | 2006-07-29 | 0 | 0 | 05 | EK | MJ3 | 05A | MJ | MJ392 |  | M |  | E |  | M | 40 | 40 | 50 | 06 |  |  |  |  |  | X |  |  |  |  |
| PK05AMJV09 |  | 05A MJ392 2105-JA/JB - E&I Prod. V. Data | 35d | 2006-04-17 A | 2006-10-06 A | PK000MJ39J | 100% |  | 2006-04-17 | 2006-06-02 |  |  |  |  | EBWK - Global | 2006-07-29 | 0 | 0 | 05 | EK | MJ3 | 05A | MJ | MJ392 |  | M |  | E |  | M | 40 | 40 | 50 | 06 |  |  |  |  |  | X |  |  |  |  |
| PK000MJ38T |  | Recv. Planning V. Data MJ308 | 20d | 2006-05-24 A | 2006-06-28 A | PK000MJ38M | 100% |  | 2006-05-22 | 2006-06-16 |  |  |  |  |  | 2006-07-29 | 0 | 0 | 00 | EK | MJ3 | 000 | MJ | MJ308 | P15 | M |  | E |  | J | 15 | 20 | 25 | 06 |  |  |  |  |  |  |  | 20 | 10 |  |
| PK05AMJV10 |  | 05A MJ731 2108-J - Civil Prod. V. Data | 35d | 2006-07-10 A | 2006-10-06 A | PK000MJ71J | 100% |  | 2006-08-21 | 2006-10-06 |  |  |  |  | EBWK - Global | 2006-07-29 | 0 | 0 | 05 | EK | MJ7 | 05A | MJ | MJ731 |  | M |  | E |  | M |  |  |  |  |  |  |  |  |  | X |  |  |  |  |
| PK05AMJV11 |  | 05A MJ731 2108-J - E&I Prod. V. Data | 35d | 2006-07-10 A | 2006-12-13 A | PK000MJ71J | 100% |  | 2006-08-22 | 2006-10-09 |  |  |  |  | EBWK - Global | 2006-07-29 | 0 | 0 | 05 | EK | MJ7 | 05A | MJ | MJ731 |  | M |  | E |  | M |  |  |  |  |  |  |  |  |  | X |  |  |  |  |

Notes:
- PK000MJ37Q: P3 Activity Log Info: Utilize FMCL as Basis for ERW's
- PK000MJ37E: P3 Activity Log Info: Using ISSP (Goulds) / Not Required
- PK000MJ38Q: P3 Activity Log Info: Utilize FMCL as Basis for ERW's
- PK000MJ38E: P3 Activity Log Info: Using ISSP (Goulds) / Not Required

| ID | WBS | Activity | Type | Duration | Start | Finish | Predecessors | Complete | Planned start | Planned finish | Total float | Free float | zData Date | PCA Criticality Index | PCA Duration Sensitivity | EB02 - UNIT | EB01 - RESP | EB06 - WORK OP | EB03 - AREA | EB05 - DISCIPLINE | EB10 - KEY | EB04 - CLASS | EB11 - FLAG | EB12 - TEMP | EB00 - EPC | EB15 - Civil / U/G Path of Construction | EB16 - Piping Path of Construction | EB17 - Suffix | Optimistic Duration | Most Likely Duration | Pessimistic Duration | Sequence | User Defined Field 1 | User Definer Field 2 | EB21 - Rev 2 Risk Associations | EB07 - REQN | EB08 - TAG | EB09 - IPMS |
| --- | --- | --- | --- | --- | --- | --- | --- | --- | --- | --- | --- | --- | --- | --- | --- | --- | --- | --- | --- | --- | --- | --- | --- | --- | --- | --- | --- | --- | --- | --- | --- | --- | --- | --- | --- | --- | --- | --- |
|  | PI | **Piping Engineering** |  |  | 2005-04-01 | 2007-02-16 |  |  |  |  |  |  |  |  |  |  |  |  |  |  |  |  |  |  |  |  |  |  |  |  |  |  |  |  |  |  |  |  |
| EK050PI005 |  | Develop Plot Plan & ID Areas - Dock/Storage IFI |  | 10d | 2005-04-01 A | 2005-04-08 A | EK020PI010 | 100% | 2005-04-01 | 2005-04-14 |  |  | 2006-07-29 | 0 | 0 | 05 | EK | P10 | 050 | PI | P17 | P | X | S1 | E | 15 | 29 | E2B2 |  |  |  |  |  |  |  |  |  |  |
| EK050PI010 |  | Develop Plot Plan & ID Areas - Dock/Storage ICA |  | 20d | 2005-04-22 A | 2005-11-11 A | EK050PI005 | 100% | 2005-04-22 | 2005-05-19 |  |  | 2006-07-29 | 0 | 0 | 05 | EK | P10 | 050 | PI | P17 | P | X | S1 | E | 15 | 29 | E2B2 |  |  |  |  |  |  |  |  |  |  |
| EK05BPI030 |  | 05B Conceptual Layout - Supersketches |  | 10d | 2005-06-06 A | 2006-11-09 A | EK020PI010 SS+5d, EK050SY030, EK050SY050 FS+10d, EK05BELED0 FF, XE000OW301 FF | 100% | 2005-06-06 | 2005-06-17 |  |  | 2006-07-29 | 0 | 0 | 05 | EK | P20 | 05B | PI | P01 | P |  |  | E | 38 | 40 | E2B2 | 10 | 15 | 30 | 030 | 05B | PI030 | 05A |  |  |  |
| EK05API030 |  | 05A Conceptual Layout - Supersketches |  | 15d | 2005-09-12 A | 2005-10-28 A | EK050SY050 | 100% | 2005-10-10 | 2005-10-28 |  |  | 2006-07-29 | 0 | 0 | 05 | EK | P20 | 05A | PI | P01 | P | X |  | E | 15 | 29 | E2B2 |  |  |  | 030 | 05A | PI030 |  |  |  |  |
| EK050PI012 |  | Plot Plan - Dock/Storage Issue IPL |  | 30d | 2005-10-17 A | 2005-11-25 A | EK050PI011 FF, PK000MD46J FF+5d, PK000MJ36J FF+5d, PK000ML33J FF+5d, PK000ML51J FF+5d | 100% | 2005-09-29 | 2005-11-09 |  |  | 2006-07-29 | 0 | 0 | 05 | EK | P10 | 050 | PI | P17 | P | X |  | E | 15 | 29 | E2B2 |  |  |  |  |  |  |  |  |  |  |
| EK050PI011 |  | Plot Plan - Dock/Storage Client ICA Approval |  | 10d | 2005-11-11 A | 2005-11-25 A | EK050PI010 | 100% | 2005-10-31 | 2005-11-11 |  |  | 2006-07-29 | 0 | 0 | 05 | EK | P10 | 050 | PI | P17 | P | X | S2 | E | 15 | 29 | E2B2 |  |  |  |  |  |  |  |  |  |  |
| EK050PI013 |  | Plot Plan - Dock/Storage Issue IPL |  | 40d | 2006-02-01 A | 2006-02-23 A | EK050PI012 | 100% | 2006-04-03 | 2006-05-26 |  |  | 2006-07-29 | 0 | 0 | 05 | EK | P10 | 050 | PI | P17 | P |  |  | E | 15 | 29 | E2B2 |  |  |  |  |  |  |  |  |  |  |
| EK050PI014 |  | Plot Plan - Dock/Storage Issue IFC |  | 30d | 2006-02-27 A | 2006-11-17 A | EK050PI013, EK050PI006 FF+10d | 100% | 2006-02-27 | 2006-04-07 |  |  | 2006-07-29 | 0 | 0 | 05 | EK | P10 | 050 | PI | P17 | P | PS | S1 | E | 15 | 29 | E2B2 |  |  |  |  |  |  |  |  |  |  |
| EK050PI006 |  | Site Data Needed - Loading Area (SPDC) |  | 30d | 2006-04-17 A | 2006-10-31 A | EK050PI005 | 100% | 2006-02-27 | 2006-04-07 |  |  | 2006-07-29 | 0 | 0 | 05 | EK | P10 | 050 | PI | P17 | P |  |  | E | 15 | 29 | E2B2 |  |  |  |  |  |  |  |  |  |  |
| EK05API050 |  | 05A Model Comment Resolution Approval |  | 3d | 2006-08-24 A | 2006-09-08 A | EM05API133 FF | 100% | 2006-08-24 | 2006-08-28 |  |  | 2006-07-29 | 0 | 0 | 05 | EK | P50 | 05A | PI | P06 | P |  |  | E | 15 | 29 | E2B2 |  |  |  | 050 | 05A | PI050 |  |  |  |  |
| EK05BPI035 |  | 05B Plot Plan |  | 5d | 2006-11-09 A | 2006-11-10 A | EK05BPI030 | 100% | 2006-11-10 | 2006-11-16 |  |  | 2006-07-29 | 0 | 0 | 05 | EK | P20 | 05B | PI | P01 | P |  |  | E | 38 | 40 | E2B2 | 10 | 15 | 30 | 030 | 05B | PI030 | 05A |  |  |  |
| EK05BPI050 |  | 05B Model Comment Resolution Approval |  | 3d | 2007-02-14 | 2007-02-16 | EM05BPI133 |  |  |  | 75d | 0d | 2006-07-29 | 0 | 1 | 05 | EK | P50 | 05B | PI | P06 | P |  |  | E | 38 | 40 | E2B2 | 3 | 3 | 5 | 050 | 05B | PI050 | 05A |  |  |  |
|  | PR | **Process Engineering** |  |  |  |  |  |  |  |  |  |  |  |  |  |  |  |  |  |  |  |  |  |  |  |  |  |  |  |  |  |  |  |  |  |  |  |  |
|  | SE | **Safety Engineering** |  |  |  |  |  |  |  |  |  |  |  |  |  |  |  |  |  |  |  |  |  |  |  |  |  |  |  |  |  |  |  |  |  |  |  |  |
|  | SY | **Systems Engineering** |  |  | 2005-04-18 | 2006-01-24 |  |  |  |  |  |  |  |  |  |  |  |  |  |  |  |  |  |  |  |  |  |  |  |  |  |  |  |  |  |  |  |  |
| EK000MF32A |  | 05A MF312 2105-F Water Tank - Process Load Sht. |  | 10d | 2005-04-18 A | 2005-04-26 A | EK000SY015, EK000SY075 SS+5d | 100% | 2005-04-18 | 2005-04-29 |  |  | 2006-07-29 | 0 | 0 | 05 | EK | Y40 | 05A | SY | FE | Y | X |  | E |  |  |  |  |  |  |  |  |  |  | MF312 | 2105F |  |
| EK050SY020 |  | 050 Dock/Storage P&ID development IDR Issue |  | 21d | 2005-05-06 A | 2005-05-26 A | EK000SY010, EK000SY060, EK010SY010, EK000PI005, EK000SY065 SS | 100% | 2005-05-06 | 2005-06-06 |  |  | 2006-07-29 | 0 | 0 | 05 | EK | YP0 | 050 | SY | Y0 | Y | X |  | E | 15 | 29 | E2B2 |  |  |  |  |  |  |  |  |  |  |
| EK050SY030 |  | 050 Dock/Storage P&ID IDR Meeting milestone |  | 2d | 2005-06-01 A | 2005-06-02 A | EK050SY020 FS+3d | 100% |  |  |  |  | 2006-07-29 | 0 | 0 | 05 | EK | YP0 | 050 | SY | Y0 | Y | X |  | E | 15 | 29 | E2B2 |  |  |  |  |  |  |  |  |  |  |
| EK050SY040 |  | 050 Dock/Storage P&IDs - ICA Issue development |  | 34d | 2005-06-03 A | 2005-07-21 A | EK000SY075 FF, EK050SY030 | 100% | 2005-06-03 | 2005-07-22 |  |  | 2006-07-29 | 0 | 0 | 05 | EK | YP0 | 050 | SY | Y1 | Y | X |  | E | 15 | 29 | E2B2 |  |  |  |  |  |  |  |  |  |  |
| EK050SY050 |  | 050 Dock/Storage P&IDs - ICA Issue Milestone | milestone | 0d | 2005-07-21 A | 2005-07-21 A | EK050SY040 FF | 100% | 2005-07-22 | 2005-07-22 |  |  | 2006-07-29 | 0 | 0 | 05 | EK | YP0 | 050 | SY | Y1 | Y | X |  | E | 15 | 29 | E2B2 |  |  |  |  |  |  |  |  |  |  |
| EK050SY060 |  | 050 Dock/Storage P&ID's - IPL Issue Development |  | 70d | 2005-07-25 A | 2005-11-11 A | EK050SY050, EK050SY135 FF+10d | 100% | 2005-07-25 | 2005-10-28 |  |  | 2006-07-29 | 0 | 0 | 05 | EK | YP0 | 050 | SY | Y2 | Y | X |  | E | 15 | 29 | E2B2 |  |  |  |  |  |  |  |  |  |  |
| EK050SY135 |  | 050 Dock/Storage CV & FE Process Data |  | 15d | 2005-09-01 A | 2005-09-15 A | EK050SY050 FS+10d, EK030SY135 | 100% | 2005-10-03 | 2005-10-21 |  |  | 2006-07-29 | 0 | 0 | 05 | EK | Y50 | 050 | SY |  | Y | X |  | E | 15 | 29 | E2B2 |  |  |  |  |  |  |  |  |  |  |
| EK050SY150 |  | 050 Relief Valve Calculations - Dock/Storage |  | 15d | 2005-09-19 A | 2005-10-26 A | EK050SY050, EK050SY135 FF+10d | 100% | 2005-09-19 | 2005-10-07 |  |  | 2006-07-29 | 0 | 0 | 05 | EK | Y50 | 050 | SY |  | Y |  |  | E | 15 | 29 | E2B2 |  |  |  |  |  |  |  | PSA08 |  | A |
| EK050SY185 |  | 050 SP Item Data Sheets - Dock/Storage |  | 10d | 2005-10-25 A | 2006-01-24 A | EK050SY050, EK050SY150 | 100% | 2005-10-25 | 2005-11-07 |  |  | 2006-07-29 | 0 | 0 | 05 | EK | Y90 | 050 | SY |  | Y |  |  | E | 15 | 29 | E2B2 |  |  |  |  |  |  |  | PS000 |  |  |
| EK050SY155 |  | 050 Issue Requisition - PSA08 Relief Valves - Dock/Storage |  | 5d | 2005-11-04 A | 2005-12-20 A | EK050SY150 | 100% | 2005-11-04 | 2005-11-11 |  |  | 2006-07-29 | 0 | 0 | 05 | EK | Y50 | 050 | SY |  | Y |  |  | E | 15 | 29 | E2B2 |  |  |  |  |  |  |  | PSA08 |  | A |
| EK050SY090 |  | 050 Dock/Storage P&IDs IPL Issue Milestone | milestone | 0d | 2005-11-11 A | 2005-11-11 A | EK050SY060 FF | 100% | 2005-12-09 | 2005-12-09 |  |  | 2006-07-29 | 0 | 0 | 05 | EK | YP0 | 050 | SY | Y2 | Y | X |  | E | 15 | 29 | E2B2 |  |  |  |  |  |  |  |  |  |  |
| EK05ASY170 |  | 05A OSBL P&IDs IPL & Line List Issue Milestone | milestone | 0d | 2005-11-11 A | 2005-11-11 A | EK050SY090 FF | 100% | 2005-12-09 | 2005-12-09 |  |  | 2006-07-29 | 0 | 0 | 05 | EK | YP0 | 05A | SY | Y2 | Y |  |  | E | 15 | 29 | E2B2 |  |  |  | 170 | 05A | SY170 |  |  |  |  |
| EK05BSY170 |  | 05B OSBL P&IDs IPL & Line List Issue Milestone | milestone | 0d | 2005-11-11 A | 2005-11-11 A | EK050SY090 FF | 100% | 2005-12-09 | 2005-12-09 |  |  | 2006-07-29 | 0 | 0 | 05 | EK | YP0 | 05B | SY | Y2 | Y |  |  | E | 38 | 40 | E2B2 |  |  |  | 170 | 05B | SY170 | 05A |  |  |  |

Notes:
- EK050PI005: P3 Activity Log Info: IFI Planned 08 April 05 / ADD ICA ISSUE
- EK050PI010: basis of schedule: Need SPDC Input for Dock Layout
- EK05BPI030: basis of schedule: Need third party dock design prior to / commencing Conceptual layout
- EK050PI012: basis of schedule: Need third party dock design prior to completing dock portion of plot plan IPL
- EK05BPI035: basis of schedule: Need third party dock design prior to / commencing Conceptual layout
- EK000MF32A: P3 Activity Log Info: Ammonia Storage Tanks

| ID | WBS | Activity | Type | Duration | Start | Finish | Predecessors | Complete | Planned start | Planned finish | zData Date | PCA Criticality Index | PCA Duration Sensitivity | EB02 - UNIT | EB01 - RESP | EB06 - WORK OP | EB03 - AREA | EB05 - DISCIPLINE | EB04 - CLASS | EB11 - FLAG | EB00 - EPC | EB07 - REQN | EB09 - IPMS | Optimistic Duration | Most Likely Duration | Pessimistic Duration | user_integer2 | EB14 - RISK | EB21 - Rev 2 Risk Associations | EB08 - TAG | EB10 - KEY |
| --- | --- | --- | --- | --- | --- | --- | --- | --- | --- | --- | --- | --- | --- | --- | --- | --- | --- | --- | --- | --- | --- | --- | --- | --- | --- | --- | --- | --- | --- | --- | --- |
|  | P | **Procurement (HOC)** |  |  | 2005-02-28 | 2008-02-11 |  |  |  |  |  |  |  |  |  |  |  |  |  |  |  |  |  |  |  |  |  |  |  |  |  |
|  | 00 | **Common** |  |  | 2005-02-28 | 2008-02-11 |  |  |  |  |  |  |  |  |  |  |  |  |  |  |  |  |  |  |  |  |  |  |  |  |  |
| PK000MM010 |  | Project material responsibility matrix |  | 25d | 2005-02-28 A | 2005-06-03 A | EK000YA002 SS | 100% | 2005-02-28 | 2005-04-01 | 2006-07-29 | 0 | 0 | 00 | PK | G10 | 000 | PK | X | X | E |  |  |  |  |  |  |  |  |  |  |
| PK000MM020 |  | Project requisition matrix |  | 16d | 2005-02-28 A | 2005-04-01 A | EK000YA002 SS | 100% | 2005-02-28 | 2005-03-21 | 2006-07-29 | 0 | 0 | 00 | PK | G10 | 000 | PK | X | X | E |  |  |  |  |  |  |  |  |  |  |
| PK000PK005 |  | Implement use of Procuri and funct'nality (Req?) |  | 5d | 2005-02-28 A | 2005-03-04 A | EK000YA002 SS | 100% |  |  | 2006-07-29 | 0 | 0 | 00 | PK | G10 | 000 | PK | X | X | E |  |  |  |  |  |  |  |  |  |  |
| PK000PK035 |  | Review ITP as with eng. |  | 25d | 2005-03-04 A | 2005-04-15 A | PK000PK005 SS | 100% | 2005-03-04 | 2005-04-07 | 2006-07-29 | 0 | 0 | 00 | PK | G10 | 000 | PK | X | X | E |  |  |  |  |  |  |  |  |  |  |
| PK000MM025 |  | Piping Bulk Quanities for Mill Run Commitment |  | 40d | 2005-03-07 A | 2005-06-06 A | PK000MM010 SS | 100% | 2005-03-07 | 2005-04-29 | 2006-07-29 | 0 | 0 | 00 | PK | G10 | 000 | PI | P | X | E | PIA11 |  |  |  |  |  |  |  |  |  |
| PK000I210B |  | 000 Control Valves - Issue RFQ |  | 5d | 2005-03-14 A | 2005-03-21 A | EK000PR035 FF+5d | 100% | 2005-06-03 | 2005-06-09 | 2006-07-29 | 0 | 0 | 00 | PK | I22 | 000 | PK | I |  | P | I2210 | B |  |  |  |  |  |  |  |  |
| PK000I354H |  | ITCC - Fabricate Hardware |  | 100d | 2005-03-14 A | 2006-10-05 A | PK000I354G, PK000I354K FF, PK000I354K, EK000I354M | 100% | 2006-10-02 | 2007-02-16 | 2006-07-29 | 0 | 4.8 | 00 | PK | I35 | 000 | IC | I |  | P | I3542 | H | 80 | 100 | 120 | 135 | 02 | 03 |  |  |
| PK000PK01C |  | Prepare/Issue Critical & Prelim. ERW's to Proc. | level of effort | 20d | 2005-03-14 A | 2005-04-08 A | PK000PK005 SS, PK000MM010 SS, PK000MM020 SS | 100% |  |  | 2006-07-29 | 0 | 0 | 00 | PK | G10 | 000 | PK | M |  | P | PK000 |  |  |  |  |  |  |  |  |  |
| PK000IC35B |  | DCS - Inquiry REQ/RFQ |  | 20d | 2005-03-16 A | 2005-03-17 A | EK000IC35A | 100% | 2005-04-27 | 2005-05-24 | 2006-07-29 | 0 | 0 | 00 | PK | I35 | 000 | PK | I |  | P | I3510 | B |  |  |  |  |  |  |  |  |
| PK000MJ31G |  | Issue MJ301 RFQ |  | 3d | 2005-03-16 A | 2005-03-23 A | EK000MJ31C | 100% | 2005-03-16 | 2005-03-18 | 2006-07-29 | 0 | 0 | 00 | PK | MJ3 | 000 | PK | M | X | P | MJ301 | B |  |  |  |  |  |  | 104J | FE |
| PK000MJ32G |  | Issue MJ302 RFQ |  | 3d | 2005-03-16 A | 2005-03-23 A | EK000MJ32C | 100% | 2005-03-16 | 2005-03-18 | 2006-07-29 | 0 | 0 | 00 | PK | MJ3 | 000 | PK | M | X | P | MJ302 | B |  |  |  |  |  |  | 107JA | FE |
| PK000IC35C |  | DCS - Receive Bids |  | 10d | 2005-03-18 A | 2005-04-13 A | PK000IC35B | 100% | 2005-05-25 | 2005-06-08 | 2006-07-29 | 0 | 0 | 00 | PK | I35 | 000 | PK | I |  | P | I3510 | C |  |  |  |  |  |  |  |  |
| PK000MC31G |  | Issue MC310 RFQ |  | 5d | 2005-03-21 A | 2005-03-28 A | EK000MC31C | 100% | 2005-03-21 | 2005-03-25 | 2006-07-29 | 0 | 0 | 00 | PK | MC3 | 000 | PK | M | X | P | MC310 | B |  |  |  |  |  |  |  | PE |
| PK000MC61G |  | Issue MC610 RFQ |  | 5d | 2005-03-21 A | 2005-03-28 A | EK000MC61C | 100% | 2005-03-21 | 2005-03-25 | 2006-07-29 | 0 | 0 | 00 | PK | MC6 | 000 | PK | M | X | P | MC610 | B |  |  |  |  |  |  |  | PE |
| PK000MD31G |  | Issue MD301 RFQ |  | 5d | 2005-03-21 A | 2005-03-25 A | EK000MD31C | 100% |  |  | 2006-07-29 | 0 | 0 | 00 | PK | MD3 | 000 | PK | M | X | P | MD301 | B |  |  |  |  |  |  | 103D | CE |
| PK000MD32G |  | Issue MD302 RFQ |  | 5d | 2005-03-21 A | 2005-03-24 A | EK000MD32C | 100% | 2005-03-21 | 2005-03-25 | 2006-07-29 | 0 | 0 | 00 | PK | MD3 | 000 | PK | M | X | P | MD302 | B |  |  |  |  |  |  | 104D1 | CE |
| PK000MD34G |  | Issue MD304 RFQ |  | 5d | 2005-03-21 A | 2005-03-25 A | EK000MD34C | 100% |  |  | 2006-07-29 | 0 | 0 | 00 | PK | MD3 | 000 | PK | M | X | P | MD304 | B |  |  |  |  |  |  |  | CE |
| PK000MD42G |  | Issue MD402 RFQ |  | 5d | 2005-03-21 A | 2005-03-25 A | EM000MD42C | 100% |  |  | 2006-07-29 | 0 | 0 | 00 | PK | MD4 | 000 | PK | M | X | P | MD402 | B |  |  |  |  |  |  |  | CE |
| PK000MD51G |  | Issue MD501 RFQ |  | 5d | 2005-03-21 A | 2005-03-25 A | EK000MD51C | 100% |  |  | 2006-07-29 | 0 | 0 | 00 | PK | MD5 | 000 | PK | M | X | P | MD501 | B |  |  |  |  |  |  | 107D | CE |
| PK000MJ22G |  | Issue MJ201 RFQ |  | 3d | 2005-03-21 A | 2005-03-21 A | EK000MJ22C | 100% | 2005-03-21 | 2005-03-23 | 2006-07-29 | 0 | 0 | 00 | PK | MJ2 | 000 | PK | M | X | P | MJ201 | B |  |  |  |  | 06 |  | 101J | CE |
| PK000MM015 |  | IPMS Initial Setup |  | 20d | 2005-03-21 A | 2005-04-15 A | EK000IM045 | 100% |  |  | 2006-07-29 | 0 | 0 | 00 | PK | G10 | 000 | PK | X | X | P |  |  |  |  |  |  |  |  |  |  |
| PK000PE030 |  | Coating Supplier of Choice Selection |  | 25d | 2005-03-21 A | 2005-06-03 A | EK000YA002 SS, EK000PI133 FF | 100% | 2005-03-21 | 2005-04-22 | 2006-07-29 | 0 | 0 | 00 | PK | V00 | 000 | PK | V | X | P |  |  |  |  |  |  |  |  |  |  |
| PK000PK020 |  | Meeting w/ doc mngmnt & eng. (work process) TREQ |  | 10d | 2005-03-21 A | 2005-03-30 A | EK000YA002 SS+15d | 100% | 2005-03-21 | 2005-04-01 | 2006-07-29 | 0 | 0 | 00 | PK | G10 | 000 | PK | X | X | P |  |  |  |  |  |  |  |  |  |  |
| PK000I210C |  | 000 Control Valves - Receive Quotes |  | 15d | 2005-03-22 A | 2005-04-19 A | PK000I210B | 100% | 2005-06-10 | 2005-06-30 | 2006-07-29 | 0 | 0 | 00 | PK | I22 | 000 | PK | I |  | P | I2210 | C |  |  |  |  |  |  |  |  |
| PK000MC32G |  | Issue MC311 RFQ |  | 5d | 2005-03-22 A | 2005-03-28 A | EK000MC32C | 100% |  |  | 2006-07-29 | 0 | 0 | 00 | PK | MC3 | 000 | PK | M | X | P | MC311 | B |  |  |  |  |  |  |  | PE |
| PK000MJ21G |  | Issue MJ202 RFQ |  | 3d | 2005-03-22 A | 2005-03-22 A | EK000MJ21C | 100% | 2005-03-22 | 2005-03-24 | 2006-07-29 | 0 | 0 | 00 | PK | MJ2 | 000 | PK | M | X | P | MJ202 | B |  |  |  |  | 06 |  |  | CE |
| PK000MJ22H |  | Receive Quotes MJ201 |  | 15d | 2005-03-22 A | 2005-04-14 A | PK000MJ22G | 100% | 2005-03-22 | 2005-04-11 | 2006-07-29 | 0 | 0 | 00 | PK | MJ2 | 000 | PK | M | X | P | MJ201 | C |  |  |  |  | 06 |  | 101J | CE |
| PK020MC31B |  | MC312 - (120,121-C) - Issue RFQ |  | 5d | 2005-03-22 A | 2005-03-28 A | EK020MC31A | 100% |  |  | 2006-07-29 | 0 | 0 | 00 | PK | MC3 | 000 | PK | M | X | P | MC312 | B |  |  |  |  |  |  |  | PE |
| PK000MBP1G |  | 101-B Prepare & Issue Shop Fab RFQ to Vendors |  | 3d | 2005-03-23 A | 2005-03-25 A | EK000MBP1C | 100% |  |  | 2006-07-29 | 0 | 0 | 00 | PK | MB2 | 000 | PK | M | Y | P | MB221 | B |  |  |  |  | 04 |  | 101B | CE |
| PK000MD41G |  | Issue MD401 RFQ |  | 3d | 2005-03-23 A | 2005-03-25 A | EK000MD41C | 100% |  |  | 2006-07-29 | 0 | 0 | 00 | PK | MD4 | 000 | PK | M | X | P | MD401 | B |  |  |  |  |  |  | 101F | CE |
| PK000MD43G |  | Issue MD403 RFQ |  | 3d | 2005-03-23 A | 2005-03-25 A | EK000MD43C | 100% |  |  | 2006-07-29 | 0 | 0 | 00 | PK | MD4 | 000 | PK | M | X | P | MD403 | B |  |  |  |  |  |  | 106F | CE |
| PK000MJ21H |  | Receive Quotes MJ202 |  | 15d | 2005-03-23 A | 2005-04-26 A | PK000MJ21G | 100% | 2005-03-23 | 2005-04-12 | 2006-07-29 | 0 | 0 | 00 | PK | MJ2 | 000 | PK | M | X | P | MJ202 | C |  |  |  |  | 06 |  |  | CE |
| PK000MJ31H |  | Receive Quotes MJ301 |  | 15d | 2005-03-24 A | 2005-05-12 A | PK000MJ31G | 100% | 2005-03-24 | 2005-04-13 | 2006-07-29 | 0 | 0 | 00 | PK | MJ3 | 000 | PK | M | X | P | MJ301 | C |  |  |  |  |  |  | 104J | FE |
| PK000MJ32H |  | Receive Quotes MJ302 |  | 15d | 2005-03-24 A | 2005-05-12 A | PK000MJ32G | 100% | 2005-03-24 | 2005-04-13 | 2006-07-29 | 0 | 0 | 00 | PK | MJ3 | 000 | PK | M | X | P | MJ302 | C |  |  |  |  |  |  | 107JA | FE |
| PK000MD32H |  | Receive Quotes MD302 |  | 15d | 2005-03-25 A | 2005-05-02 A | PK000MD32G | 100% | 2005-03-25 | 2005-04-14 | 2006-07-29 | 0 | 0 | 00 | PK | MD3 | 000 | PK | M | X | P | MD302 | C |  |  |  |  |  |  | 104D1 | CE |
| PK000MD33G |  | Issue MD303 RFQ |  | 3d | 2005-03-25 A | 2005-03-25 A | EK000MD33C | 100% | 2005-03-25 | 2005-03-29 | 2006-07-29 | 0 | 0 | 00 | PK | MD3 | 000 | PK | M | X | P | MD303 | B |  |  |  |  |  |  | 105D | FE |
| PK000ML31G |  | Issue ML313 RFQ |  | 3d | 2005-03-25 A | 2005-03-25 A | EK000ML31C | 100% | 2005-03-25 | 2005-03-29 | 2006-07-29 | 0 | 0 | 00 | PK | ML3 | 000 | PK | M | X | P | ML313 | B |  |  |  |  |  |  | 160L | FE |
| PK000I131B |  | Issue RFQ - Transmitters |  | 5d | 2005-03-28 A | 2005-03-31 A | EK000PR035 | 100% | 2005-06-03 | 2005-06-09 | 2006-07-29 | 0 | 0 | 00 | PK | I13 | 000 | PK | I |  | P | I1310 | B |  |  |  |  |  |  |  |  |
| PK000MB61G |  | Issue MB610 RFQ |  | 3d | 2005-03-28 A | 2005-03-28 A | EK000MB61C | 100% | 2005-03-28 | 2005-03-30 | 2006-07-29 | 0 | 0 | 00 | PK | MB6 | 000 | PK | M | Y | P | MB610 | B |  |  |  |  | 04 |  | 101BA | CE |
| PK000MB62G |  | Issue MB621 RFQ |  | 3d | 2005-03-28 A | 2005-03-31 A | EK000MB62C | 100% | 2005-03-28 | 2005-03-30 | 2006-07-29 | 0 | 0 | 00 | PK | MB6 | 000 | PK | M | Y | P | MB621 | B |  |  |  |  | 04 |  | 101BJ1 | CE |
| PK000MB81G |  | Issue MB810 RFQ |  | 3d | 2005-03-28 A | 2005-03-30 A | EK000MB81C | 100% |  |  | 2006-07-29 | 0 | 0 | 00 | PK | MB8 | 000 | PK | M | Y | P | MB810 | B |  |  |  |  |  |  |  | CE |
| PK000MBP1H |  | 101-B Receive Quotes Shop Fab |  | 6d | 2005-03-28 A | 2005-04-04 A | PK000MBP1G | 100% |  |  | 2006-07-29 | 0 | 0 | 00 | PK | MB2 | 000 | PK | M | Y | P | MB221 | C |  |  |  |  | 04 |  | 101B | CE |
| PK000MD31H |  | Receive Quotes MD301 |  | 15d | 2005-03-28 A | 2005-05-13 A | PK000MD31G | 100% | 2005-03-28 | 2005-04-15 | 2006-07-29 | 0 | 0 | 00 | PK | MD3 | 000 | PK | M | X | P | MD301 | C |  |  |  |  |  |  | 103D | CE |
| PK000MD33H |  | Receive Quotes MD303 |  | 15d | 2005-03-28 A | 2005-05-13 A | PK000MD33G | 100% | 2005-03-28 | 2005-04-15 | 2006-07-29 | 0 | 0 | 00 | PK | MD3 | 000 | PK | M | X | P | MD303 | C |  |  |  |  |  |  | 105D | FE |
| PK000MD34H |  | Receive Quotes MD304 |  | 15d | 2005-03-28 A | 2005-04-14 A | PK000MD34G | 100% | 2005-03-28 | 2005-04-15 | 2006-07-29 | 0 | 0 | 00 | PK | MD3 | 000 | PK | M | X | P | MD304 | C |  |  |  |  |  |  |  | CE |
| PK000MD41H |  | Receive Quotes MD401 |  | 15d | 2005-03-28 A | 2005-04-14 A | PK000MD41G | 100% | 2005-03-28 | 2005-04-15 | 2006-07-29 | 0 | 0 | 00 | PK | MD4 | 000 | PK | M | X | P | MD401 | C |  |  |  |  |  |  | 101F | CE |
| PK000MD42H |  | Receive Quotes MD402 |  | 15d | 2005-03-28 A | 2005-04-21 A | PK000MD42G | 100% | 2005-03-28 | 2005-04-15 | 2006-07-29 | 0 | 0 | 00 | PK | MD4 | 000 | PK | M | X | P | MD402 | C |  |  |  |  |  |  |  | CE |
| PK000MD43H |  | Receive Quotes MD403 |  | 15d | 2005-03-28 A | 2005-05-02 A | PK000MD43G | 100% | 2005-03-28 | 2005-04-15 | 2006-07-29 | 0 | 0 | 00 | PK | MD4 | 000 | PK | M | X | P | MD403 | C |  |  |  |  |  |  | 106F | CE |
| PK000MD51H |  | Receive Quotes MD501 |  | 15d | 2005-03-28 A | 2005-04-21 A | PK000MD51G | 100% | 2005-03-28 | 2005-04-15 | 2006-07-29 | 0 | 0 | 00 | PK | MD5 | 000 | PK | M | X | P | MD501 | C |  |  |  |  |  |  | 107D | CE |
| PK000ML31H |  | Receive Quotes ML313 |  | 15d | 2005-03-28 A | 2005-05-05 A | PK000ML31G | 100% | 2005-03-28 | 2005-04-15 | 2006-07-29 | 0 | 0 | 00 | PK | ML3 | 000 | PK | M | X | P | ML313 | C |  |  |  |  |  |  | 160L | FE |
| PK000MB61H |  | Receive Quotes for MB610 |  | 10d | 2005-03-29 A | 2005-04-12 A | PK000MB61G | 100% | 2005-03-29 | 2005-04-11 | 2006-07-29 | 0 | 0 | 00 | PK | MB6 | 000 | PK | M | Y | P | MB610 | C |  |  |  |  | 04 |  | 101BA | CE |
| PK000MC31H |  | Receive Quotes for MC310 |  | 15d | 2005-03-29 A | 2005-06-03 A | PK000MC31G | 100% | 2005-03-29 | 2005-04-18 | 2006-07-29 | 0 | 0 | 00 | PK | MC3 | 000 | PK | M | X | P | MC310 | C |  |  |  |  |  |  |  | PE |
| PK000MC32H |  | Receive Quotes for MC311 |  | 15d | 2005-03-29 A | 2005-06-03 A | PK000MC32G | 100% | 2005-03-29 | 2005-04-18 | 2006-07-29 | 0 | 0 | 00 | PK | MC3 | 000 | PK | M | X | P | MC311 | C |  |  |  |  |  |  |  | PE |
| PK000MC61H |  | Receive Quotes MC610 |  | 15d | 2005-03-29 A | 2005-04-15 A | PK000MC61G | 100% | 2005-03-29 | 2005-04-18 | 2006-07-29 | 0 | 0 | 00 | PK | MC6 | 000 | PK | M | X | P | MC610 | C |  |  |  |  |  |  |  | PE |
| PK000ML50G |  | Issue ML500 RFQ |  | 3d | 2005-03-29 A | 2005-03-31 A | EK000ML50C | 100% |  |  | 2006-07-29 | 0 | 0 | 00 | PK | ML5 | 000 | PK | M | Y | P | ML500 | B |  |  |  |  |  |  | 2003L | FE |
| PK020MC3C |  | MC312 - (120,121-C) - Receive Quotes |  | 15d | 2005-03-29 A | 2005-06-03 A | PK020MC31B | 100% | 2005-03-29 | 2005-04-18 | 2006-07-29 | 0 | 0 | 00 | PK | MC3 | 000 | PK | M | X | P | MC312 | C |  |  |  |  |  |  |  | PE |
| PK000MB41G |  | Issue MB410 RFQ |  | 3d | 2005-03-30 A | 2005-03-31 A | EK000MB41C | 100% | 2005-03-30 | 2005-04-01 | 2006-07-29 | 0 | 0 | 00 | PK | MB4 | 000 | PK | M | Y | P | MB410 | B |  |  |  |  | 04 |  | 101B | CE |
| PK000MC21G |  | Issue MC210 RFQ |  | 3d | 2005-03-30 A | 2005-03-30 A | EK000MC21C | 100% | 2005-03-30 | 2005-04-01 | 2006-07-29 | 0 | 0 | 00 | PK | MC2 | 000 | PK | M | X | P | MC210 | B |  |  |  |  |  |  |  | PE |
| PK000MC23G |  | Issue MC230 RFQ |  | 3d | 2005-03-30 A | 2005-03-30 A | EK000MC23C | 100% | 2005-03-30 | 2005-04-01 | 2006-07-29 | 0 | 0 | 00 | PK | MC2 | 000 | PK | M | X | P | MC230 | B |  |  |  |  |  |  |  | PE |
| PK000MB63G |  | Issue MB630 RFQ |  | 3d | 2005-03-31 A | 2005-04-04 A | EK000MB63C | 100% |  |  | 2006-07-29 | 0 | 0 | 00 | PK | MB6 | 000 | PK | M | Y | P | MB630 | B |  |  |  |  | 04 |  | 101BL1 | CE |
| PK000MBP4G |  | Issue 101-B Cast Material RFQ |  | 3d | 2005-03-31 A | 2005-04-04 A | EK000MBP4C | 100% |  |  | 2006-07-29 | 0 | 0 | 00 | PK | MB3 | 000 | PK | M | Y | P | MB312 | B |  |  |  |  | 04 |  | 101B | CE |
| PK000MC21H |  | Receive Quotes for MC210 |  | 15d | 2005-03-31 A | 2005-04-25 A | PK000MC21G | 100% | 2005-03-31 | 2005-04-20 | 2006-07-29 | 0 | 0 | 00 | PK | MC2 | 000 | PK | M | X | P | MC210 | C |  |  |  |  |  |  |  | PE |
| PK000MC23H |  | Receive Quotes for MC230 |  | 15d | 2005-03-31 A | 2005-05-02 A | PK000MC23G | 100% | 2005-03-31 | 2005-04-20 | 2006-07-29 | 0 | 0 | 00 | PK | MC2 | 000 | PK | M | X | P | MC230 | C |  |  |  |  |  |  |  | PE |
| PK000MD22G |  | Issue MD202 RFQ |  | 3d | 2005-03-31 A | 2005-03-31 A | EM000MD22C | 100% | 2005-03-31 | 2005-04-04 | 2006-07-29 | 0 | 0 | 00 | PK | MD2 | 000 | PK | M | X | P | MD202 | B |  |  |  |  |  |  |  | FE |
| PK000MD44G |  | Issue MD404 RFQ |  | 3d | 2005-03-31 A | 2005-03-31 A | EM000MD44C | 100% | 2005-03-31 | 2005-04-04 | 2006-07-29 | 0 | 0 | 00 | PK | MD4 | 000 | PK | M | X | P | MD404 | B |  |  |  |  |  |  |  | NE |
| PK000MD45G |  | Issue MD405 RFQ |  | 3d | 2005-03-31 A | 2005-03-31 A | EM00MD45C | 100% | 2005-03-31 | 2005-04-04 | 2006-07-29 | 0 | 0 | 00 | PK | MD4 | 000 | PK | M | X | P | MD405 | B |  |  |  |  |  |  |  | CE |
| PK000MD46G |  | Issue MD411 RFQ |  | 3d | 2005-03-31 A | 2005-03-31 A | EM000MD46C | 100% | 2005-03-31 | 2005-04-04 | 2006-07-29 | 0 | 0 | 00 | PK | MD4 | 000 | PK | M | X | P | MD411 | B |  |  |  |  |  |  |  | PE |
| PK000I131C |  | Receive Quotes - Transmitters |  | 15d | 2005-04-01 A | 2005-04-25 A | PK000I131B | 100% | 2005-06-10 | 2005-06-30 | 2006-07-29 | 0 | 0 | 00 | PK | I13 | 000 | PK | I |  | P | I1310 | C |  |  |  |  |  |  |  |  |

Notes:
- PK000MD31G: P3 Activity Log Info: 103-D (Secondary Reformer)
- PK000MD32G: P3 Activity Log Info: 104-D1/D2 (High Temp Shift Converters)
- PK000MD34G: P3 Activity Log Info: 106-D, 108-DA/DB, 109-DA/DB
- PK000MD42G: P3 Activity Log Info: 102-F1/F2, 104-F, 144-F (ISBL Drums)
- PK000MD51G: P3 Activity Log Info: 107-D (Primary Reformer Effluent Transfer Line)
- PK000MM015: P3 Activity Log Info: WBS, PCOA, Supplier Addresses Need to address / workgroup inputs into IPMS to support purchasing being able to let POs from / IPMS
- PK000MD41G: P3 Activity Log Info: 101-f (Steam Drum)
- PK000MD43G: P3 Activity Log Info: 106-F (Ammonia Separator)
- PK000MJ32H: P3 Activity Log Info: Lean Solution Pumps / 107-J
- PK000MD33G: P3 Activity Log Info: 105-D, 122-C1/2/3 (Ammonia Synthesis Converter)
- PK000MD22G: P3 Activity Log Info: 103-E, 104-E, 105-E, 150-E
- PK000MD44G: P3 Activity Log Info: 107-F, 109-F, 132-F
- PK000MD45G: P3 Activity Log Info: 115/118/156/157-F (Drums, Sumps, Filter)
- PK000MD46G: P3 Activity Log Info: 2006-F, 2203-F, 2204-F, 2205-F

| ID | Activity | Duration | Start | Finish | Predecessors | Complete | Planned start | Planned finish | zData Date | PCA Criticality Index | PCA Duration Sensitivity | EB02 - UNIT | EB01 - RESP | EB06 - WORK OP | EB03 - AREA | EB05 - DISCIPLINE | EB07 - REQN | EB08 - TAG | EB10 - KEY | EB04 - CLASS | EB11 - FLAG | EB09 - IPMS | EB00 - EPC | EB14 - RISK | user_integer2 |
| --- | --- | --- | --- | --- | --- | --- | --- | --- | --- | --- | --- | --- | --- | --- | --- | --- | --- | --- | --- | --- | --- | --- | --- | --- | --- |
| PK000MB41H | Receive Quotes for MB410 | 20d | 2005-04-01 A | 2005-05-20 A | PK000MB41G | 100% | 2005-04-01 | 2005-04-28 | 2006-07-29 | 0 | 0 | 00 | PK | MB4 | 000 | PK | MB410 | 101B | CE | M | X | C | P | 04 |  |
| PK000MB62H | Receive Quotes for MB621 | 15d | 2005-04-01 A | 2005-04-28 A | PK000MB62G | 100% | 2005-04-01 | 2005-04-21 | 2006-07-29 | 0 | 0 | 00 | PK | MB6 | 000 | PK | MB621 | 101BJ1 | CE | M | Y | C | P | 04 |  |
| PK000MB81H | Receive Quotes for MB810 | 20d | 2005-04-01 A | 2005-04-27 A | PK000MB81G | 100% | 2005-04-01 | 2005-04-28 | 2006-07-29 | 0 | 0 | 00 | PK | MB8 | 000 | PK | MB810 |  | CE | M | Y | C | P |  |  |
| PK000MD22H | Receive Quotes for MD202 | 15d | 2005-04-01 A | 2005-04-21 A | PK000MD22G | 100% |  |  | 2006-07-29 | 0 | 0 | 00 | PK | MD2 | 000 | PK | MD202 |  | FE | M | X | C | P |  |  |
| PK000MD44H | Receive Quotes MD404 | 15d | 2005-04-01 A | 2005-04-21 A | PK000MD44G | 100% |  |  | 2006-07-29 | 0 | 0 | 00 | PK | MD4 | 000 | PK | MD404 |  | NE | M | X | C | P |  |  |
| PK000MD45H | Receive Quotes MD405 | 15d | 2005-04-01 A | 2005-04-21 A | PK000MD45G | 100% |  |  | 2006-07-29 | 0 | 0 | 00 | PK | MD4 | 000 | PK | MD405 |  | CE | M | X | C | P |  |  |
| PK000MD46H | Receive Quotes MD411 | 15d | 2005-04-01 A | 2005-04-21 A | PK000MD46G | 100% |  |  | 2006-07-29 | 0 | 0 | 00 | PK | MD4 | 000 | PK | MD411 |  | PE | M | X | C | P |  |  |
| PK000ML50H | Receive Quotes ML500 | 15d | 2005-04-01 A | 2005-04-22 A | PK000ML50G | 100% | 2005-04-01 | 2005-04-21 | 2006-07-29 | 0 | 0 | 00 | PK | ML5 | 000 | PK | ML500 | 2003L | FE | M | X | C | P |  |  |
| PK000MJ35G | Issue MJ305 RFQ | 3d | 2005-04-04 A | 2005-04-11 A | EK000MJ35C | 100% | 2005-04-04 | 2005-04-06 | 2006-07-29 | 0 | 0 | 00 | PK | MJ3 | 000 | PK | MJ305 |  | CE | M | X | B | P |  |  |
| PK000MJ36G | Issue MJ306 RFQ | 3d | 2005-04-04 A | 2005-04-11 A | EK000MJ36C | 100% | 2005-04-04 | 2005-04-06 | 2006-07-29 | 0 | 0 | 00 | PK | MJ3 | 000 | PK | MJ306 |  | PE | M | X | B | P |  |  |
| PK000MB63H | Receive Quotes for MB630 | 18d | 2005-04-05 A | 2005-04-28 A | PK000MB63G | 100% |  |  | 2006-07-29 | 0 | 0 | 00 | PK | MB6 | 000 | PK | MB630 | 101BL1 | CE | M | Y | C | P | 04 |  |
| PK000MBP3G | Issue 101-B Pressure Parts RFQ | 3d | 2005-04-05 A | 2005-04-06 A | EK000MBP3C | 100% | 2005-04-05 | 2005-04-07 | 2006-07-29 | 0 | 0 | 00 | PK | MB3 | 000 | PK | MB311 | 101B | CE | M | Y | B | P | 04 |  |
| PK000MBP4H | Receive Quotes for 101-B Cast Material | 18d | 2005-04-05 A | 2005-05-04 A | PK000MBP4G | 100% | 2005-04-05 | 2005-04-28 | 2006-07-29 | 0 | 0 | 00 | PK | MB3 | 000 | PK | MB312 | 101B | CE | M | Y | C | P | 04 |  |
| PK000MJ21I | Eval Bids & Issue Recmd MJ202 | 5d | 2005-04-05 A | 2005-04-05 A | EK000MJ21D | 100% | 2005-04-05 | 2005-04-11 | 2006-07-29 | 0 | 0 | 00 | PK | MJ2 | 000 | PK | MJ202 |  | CE | M | X | E | P | 06 |  |
| PK000MB51G | Issue MB511 RFQ | 3d | 2005-04-07 A | 2005-04-08 A | EK000MB51C | 100% | 2005-04-07 | 2005-04-11 | 2006-07-29 | 0 | 0 | 00 | PK | MB5 | 000 | PK | MB511 | 101B | CE | M | Y | B | P | 04 |  |
| PK000MBP3H | Receive Quotes for 101-B Pressure Part | 15d | 2005-04-07 A | 2005-05-16 A | PK000MBP3G | 100% | 2005-04-07 | 2005-04-27 | 2006-07-29 | 0 | 0 | 00 | PK | MB3 | 000 | PK | MB311 | 101B | CE | M | X | C | P | 04 |  |
| PK000IC36B | DCS (MIV) - Inquiry REQ/RFQ | 8d | 2005-04-08 A | 2005-04-20 A | EK000IC030 | 100% | 2005-04-08 | 2005-04-19 | 2006-07-29 | 0 | 0 | 00 | PK | I35 | 000 | PK | I3511 |  |  | I |  | B | P |  |  |
| PK000MJ39G | Issue MJ391/MJ392 RFQ | 3d | 2005-04-08 A | 2005-04-08 A | EK000MJ39C | 100% | 2005-04-08 | 2005-04-12 | 2006-07-29 | 0 | 0 | 00 | PK | MJ3 | 000 | PK | MJ391 |  | PE | M | X | B | P |  |  |
| PK000MB51H | Receive Quotes for MB511 | 16d | 2005-04-11 A | 2005-05-02 A | PK000MB51G | 100% |  |  | 2006-07-29 | 0 | 0 | 00 | PK | MB5 | 000 | PK | MB511 | 101B | CE | M | Y | C | P | 04 |  |
| PK000MJ22M | Requote/Bid Condition/Final Tab - MJ201 | 20d | 2005-04-11 A | 2005-06-17 A | EK000MJ22F | 100% | 2005-04-11 | 2005-05-06 | 2006-07-29 | 0 | 0 | 00 | PK | MJ2 | 000 | PK | MJ201 | 101J | CE | M | X | G | P | 06 |  |
| PK000MJ39H | Receive Quotes MJ391/MJ392 | 15d | 2005-04-11 A | 2005-05-09 A | PK000MJ39G | 100% | 2005-04-11 | 2005-04-29 | 2006-07-29 | 0 | 0 | 00 | PK | MJ3 | 000 | PK | MJ391 |  | PE | M | X | C | P |  |  |
| PK000ML42G | Issue ML420 RFQ | 3d | 2005-04-11 A | 2005-04-14 A | EK000ML42C | 100% | 2005-04-11 | 2005-04-13 | 2006-07-29 | 0 | 0 | 00 | PK | ML4 | 000 | PK | ML420 |  | NE | M | X | B | P |  |  |
| PK000MU35G | Issue MU350 RFQ | 5d | 2005-04-11 A | 2005-04-12 A | EK000YA002 SS | 100% | 2005-04-11 | 2005-04-15 | 2006-07-29 | 0 | 0 | 00 | PK | MU3 | 000 | PK | MU350 | 101U | FE | M | X | B | P |  |  |
| PK000PK045 | Review ISSP work process with eng. | 5d | 2005-04-11 A | 2005-04-15 A | EK000YA002 SS+15d | 100% |  |  | 2006-07-29 | 0 | 0 | 00 | PK | G10 | 000 | PK |  |  |  | X | X |  | P |  |  |
| PK000PK050 | Est Preselect low cost redundent bid items | 5d | 2005-04-11 A | 2005-04-15 A | PK000PK045 SS, PK000PK020, PK000PK035 FF | 100% |  |  | 2006-07-29 | 0 | 0 | 00 | PK | G10 | 000 | PK |  |  |  | X | X |  | P |  |  |
| PK000MBP1I | Eval Bids & Issue Recmd 101-B Shop Fab | 5d | 2005-04-12 A | 2005-04-12 A | EK000MBP1D, PK000MBP1H | 100% | 2005-04-12 | 2005-04-18 | 2006-07-29 | 0 | 0 | 00 | PK | MB2 | 000 | PK | MB221 | 101B | CE | M | Y | E | P | 04 |  |
| PK000MJ35H | Receive Quotes MJ305 | 15d | 2005-04-12 A | 2005-04-25 A | PK000MJ35G | 100% | 2005-04-12 | 2005-05-02 | 2006-07-29 | 0 | 0 | 00 | PK | MJ3 | 000 | PK | MJ305 |  | CE | M | X | C | P |  |  |
| PK000MJ36H | Receive Quotes MJ306 | 15d | 2005-04-12 A | 2005-04-25 A | PK000MJ36G | 100% | 2005-04-12 | 2005-05-02 | 2006-07-29 | 0 | 0 | 00 | PK | MJ3 | 000 | PK | MJ306 |  | PE | M | X | C | P |  |  |
| PK000MJ21M | Requote/Bid Condition/Final Tab - MJ202 | 20d | 2005-04-13 A | 2005-06-01 A | EK000MJ21F | 100% | 2005-04-13 | 2005-05-10 | 2006-07-29 | 0 | 0 | 00 | PK | MJ2 | 000 | PK | MJ202 |  | CE | M | X | G | P | 06 |  |
| PK000MU35H | Receive Quotes MU350 | 15d | 2005-04-13 A | 2005-05-06 A | PK000MU35G | 100% | 2005-04-13 | 2005-05-03 | 2006-07-29 | 0 | 0 | 00 | PK | MU3 | 000 | PK | MU350 | 101U | FE | M | X | C | P |  |  |
| PK000MBP1J | Final Negotiate/Interim Award - 101-B Shop Fab | 10d | 2005-04-15 A | 2005-09-09 A | EK000MBP1D, EK000MBP1E, PK000MBP1I, EK000EB015 | 100% | 2005-09-09 | 2005-09-23 | 2006-07-29 | 0 | 0 | 00 | PK | MB2 | 000 | PK | MB221 | 101B | CE | M | X | G | P | 04 | 10 |
| PK000ML42H | Receive Quotes ML420 | 15d | 2005-04-15 A | 2005-05-09 A | PK000ML42G | 100% | 2005-04-15 | 2005-05-05 | 2006-07-29 | 0 | 0 | 00 | PK | ML4 | 000 | PK | ML420 |  | NE | M | X | C | P |  |  |
| PK000PIA1A | Bulk Piping A/G & U/G - Issue REQ/RFQ to Vend | 20d | 2005-04-18 A | 2005-04-20 A | PK000PK050 FF | 100% | 2005-05-11 | 2005-06-08 | 2006-07-29 | 0 | 0 | 00 | PK | P00 | 000 | PK | PIA11 |  |  | P |  | B | P |  |  |
| PK000ML31M | Requote/Bid Condition/Final Tab - ML313 | 20d | 2005-04-18 A | 2005-08-29 A | EK000ML31F | 100% | 2005-04-18 | 2005-05-13 | 2006-07-29 | 0 | 0 | 00 | PK | ML3 | 000 | PK | ML313 | 160L | FE | M | X | G | P |  |  |
| PK000MJ22I | Eval Bids & Issue Recmd MJ201 | 5d | 2005-04-19 A | 2005-04-21 A | EK000MJ22D | 100% | 2005-04-19 | 2005-04-25 | 2006-07-29 | 0 | 0 | 00 | PK | MJ2 | 000 | PK | MJ201 | 101J | CE | M | X | E | P | 06 |  |
| PK000MU41G | Issue MU410 RFQ | 6d | 2005-04-19 A | 2005-04-21 A | EK000MU41F | 100% | 2005-04-19 | 2005-04-27 | 2006-07-29 | 0 | 0 | 00 | PK | MU4 | 000 | PK | MU410 | 2002U | PE | M | X | B | P | 05 |  |
| PK000MB61I | Eval Bids & Issue Recmd MB610 | 5d | 2005-04-20 A | 2005-05-26 A | EK000MB61D, PK000MB61H | 100% | 2005-04-20 | 2005-04-26 | 2006-07-29 | 0 | 0 | 00 | PK | MB6 | 000 | PK | MB610 | 101BA | CE | M | X | E | P | 04 |  |
| PK000PIA1B | Bulk Piping A/G & U/G - Receive Bids | 10d | 2005-04-21 A | 2005-06-03 A | PK000PIA1A | 100% | 2005-06-09 | 2005-06-22 | 2006-07-29 | 0 | 0 | 00 | PK | P00 | 000 | PK | PIA11 |  |  | P | X | C | P |  |  |
| PK000IC36C | DCS (MIV) - Receive Bids | 17d | 2005-04-21 A | 2005-05-13 A | PK000IC36B | 100% |  |  | 2006-07-29 | 0 | 0 | 00 | PK | I35 | 000 | PK | I3511 |  |  | I | X | C | P |  |  |
| PK000MU41H | Receive Quotes MU410 | 15d | 2005-04-22 A | 2005-05-26 A | PK000MU41G | 100% | 2005-04-22 | 2005-05-13 | 2006-07-29 | 0 | 0 | 00 | PK | MU4 | 000 | PK | MU410 | 2002U | PE | M | X | C | P | 05 |  |
| PK000MJ35I | Eval Bids & Issue Recmd MJ305 | 5d | 2005-04-26 A | 2005-06-02 A | EK000MJ35D | 100% | 2005-04-26 | 2005-05-03 | 2006-07-29 | 0 | 0 | 00 | PK | MJ3 | 000 | PK | MJ305 |  | CE | M | X | E | P |  |  |
| PK000MU30G | Issue MU300 RFQ | 3d | 2005-04-26 A | 2005-04-28 A | EK000MU30F | 100% | 2005-06-14 | 2005-06-16 | 2006-07-29 | 0 | 0 | 00 | PK | MU3 | 000 | PK | MU300 | 2102U | FE | M |  | B | P | 09 |  |
| PK000MU61G | Issue MU611 RFQ | 3d | 2005-04-26 A | 2005-05-05 A | EK000MU61F | 100% | 2005-08-25 | 2005-08-30 | 2006-07-29 | 0 | 0 | 00 | PK | MU6 | 000 | PK | MU611 | 2101U | PE | M | X | B | P |  |  |
| PK000MU30H | Receive Quotes MU300 | 15d | 2005-04-29 A | 2005-06-10 A | PK000MU30G | 100% | 2005-06-17 | 2005-07-11 | 2006-07-29 | 0 | 0 | 00 | PK | MU3 | 000 | PK | MU300 | 2102U | FE | M | X | C | P | 09 |  |
| PK000MC61I | Eval Bids & Issue Recmd MC610 | 5d | 2005-05-03 A | 2005-05-06 A | EK000MC61D, PK000MC61H | 100% | 2005-05-03 | 2005-05-09 | 2006-07-29 | 0 | 0 | 00 | PK | MC6 | 000 | PK | MC610 |  | PE | M | X | E | P |  |  |
| PK000PSA8A | 000 Relief Valves - Issue RFQ | 5d | 2005-05-05 A | 2005-05-11 A | EK010SY155, EK020SY197, EK020SY196, EK020SY195, EK030SY155, EK050SY155 | 100% | 2006-02-27 | 2006-03-03 | 2006-07-29 | 0 | 0 | 00 | PK | I22 | 000 | PK | PSA08 |  | IR | P |  | B | P |  |  |
| PK000MD51I | Eval Bids & Issue Recmd MD501 | 5d | 2005-05-06 A | 2005-06-24 A | EK000MD51D, PK000MD51H | 100% | 2005-05-06 | 2005-05-12 | 2006-07-29 | 0 | 0 | 00 | PK | MD5 | 000 | PK | MD501 | 107D | CE | M | X | E | P |  |  |
| PK000MJ36I | Eval Bids & Issue Recmd MJ306 | 5d | 2005-05-06 A | 2005-05-12 A | EK000MJ36D | 100% |  |  | 2006-07-29 | 0 | 0 | 00 | PK | MJ3 | 000 | PK | MJ306 |  | PE | M | X | E | P |  |  |
| PK000MU61H | Receive Quotes MU611 | 15d | 2005-05-06 A | 2005-06-02 A | PK000MU61G | 100% | 2005-05-06 | 2005-05-26 | 2006-07-29 | 0 | 0 | 00 | PK | MU6 | 000 | PK | MU611 | 2101U | PE | M | X | C | P |  |  |
| PK000PK040 | Establish Project Warranty Criteria | 5d | 2005-05-06 A | 2005-05-12 A | EK000PC005 FS+20d | 100% |  |  | 2006-07-29 | 0 | 0 | 00 | PK | G10 | 000 | PK |  |  |  | X | X |  | P |  |  |
| PK000MC61M | Requote/Bid Condition/Final Tab - MC610 | 20d | 2005-05-09 A | 2005-10-05 A | EK000MC61F | 100% | 2005-05-23 | 2005-06-20 | 2006-07-29 | 0 | 0 | 00 | PK | MC6 | 000 | PK | MC610 |  | PE | M | X | G | P |  |  |
| PK000MU33G | Issue MU330 RFQ | 3d | 2005-05-09 A | 2005-05-10 A | EK000MU33C, EK000MU33F | 100% | 2005-06-13 | 2005-06-15 | 2006-07-29 | 0 | 0 | 00 | PK | MU3 | 000 | PK | MU330 | 2001U | FE | M | X | B | P |  |  |
| PK000IC35E | DCS - Eval Bids/Issue Recmd | 15d | 2005-05-09 A | 2005-06-30 A | EK000IC35D FF, PK000IC35C, EK000IC010 FF | 100% | 2005-05-09 | 2005-05-27 | 2006-07-29 | 0 | 0 | 00 | PK | I35 | 000 | PK | I3510 |  |  | I | X | E | P |  |  |
| PK000MD51M | Requote/Bid Condition/Final Tab - MD501 | 20d | 2005-05-10 A | 2005-06-03 A | EK000MD51F | 100% | 2005-05-06 | 2005-06-03 | 2006-07-29 | 0 | 0 | 00 | PK | MD5 | 000 | PK | MD501 | 107D | CE | M | X | G | P |  |  |
| PK000MU33H | Receive Quotes MU330 | 2d | 2005-05-11 A | 2005-06-20 A | PK000MU33G | 100% | 2005-06-03 | 2005-06-06 | 2006-07-29 | 0 | 0 | 00 | PK | MU3 | 000 | PK | MU330 | 2001U | FE | M | X | C | P |  |  |
| PK000PSA8B | 000 Relief Valves - Receive Quotes | 15d | 2005-05-11 A | 2005-07-21 A | PK000PSA8A | 100% | 2006-03-06 | 2006-03-24 | 2006-07-29 | 0 | 0 | 00 | PK | I22 | 000 | PK | PSA08 |  | IR | P |  | C | P |  |  |
| PK000MD31M | Final Tab/Recmd - MD301 | 20d | 2005-05-18 A | 2005-08-24 A | EK000MD31F | 100% | 2005-05-18 | 2005-06-15 | 2006-07-29 | 0 | 0 | 00 | PK | MD3 | 000 | PK | MD301 | 103D | CE | M | X | G | P |  |  |
| PK000MD22I | Eval Bids & Issue Recmd MD202 | 5d | 2005-05-20 A | 2005-06-03 A | EM000MD22D, PK000MD22H | 100% | 2005-05-06 | 2005-05-12 | 2006-07-29 | 0 | 0 | 00 | PK | MD2 | 000 | PK | MD202 |  | FE | M | X | E | P |  |  |
| PK000MD42I | Eval Bids & Issue Recmd MD402 | 5d | 2005-05-20 A | 2005-06-03 A | EM000MD42D, PK000MD42H | 100% | 2005-05-06 | 2005-05-12 | 2006-07-29 | 0 | 0 | 00 | PK | MD4 | 000 | PK | MD402 |  | CE | M | X | E | P |  |  |
| PK000MD44I | Eval Bids & Issue Recmd MD404 | 5d | 2005-05-20 A | 2005-06-03 A | EM000MD44D, PK000MD44H | 100% | 2005-05-06 | 2005-05-12 | 2006-07-29 | 0 | 0 | 00 | PK | MD4 | 000 | PK | MD404 |  | NE | M | X | E | P |  |  |
| PK000MD45I | Eval Bids & Issue Recmd MD405 | 5d | 2005-05-20 A | 2005-06-01 A | EM000MD45D, PK000MD45H | 100% | 2005-05-06 | 2005-05-12 | 2006-07-29 | 0 | 0 | 00 | PK | MD4 | 000 | PK | MD405 |  | CE | M | X | E | P |  |  |
| PK000MJ36J | Final Negotiate/Interim Award - MJ306 | 10d | 2005-05-20 A | 2005-06-02 A | EK000EB015, EK000MJ36F S1 | 100% | 2005-09-26 | 2005-10-07 | 2006-07-29 | 0 | 0 | 00 | PK | MJ3 | 000 | PK | MJ306 |  | PE | M |  | G | P |  |  |
| PK000I110B | Issue RFQ - Orific Plates | 5d | 2005-05-23 A | 2005-05-26 A | EK000IC025 | 100% | 2005-06-03 | 2005-06-09 | 2006-07-29 | 0 | 0 | 00 | PK | I21 | 000 | PK | I2110 |  |  | I |  | B | P |  |  |
| PK000I112B | Issue RFQ - Venturis | 5d | 2005-05-23 A | 2005-05-26 A | EK000IC025 | 100% | 2005-06-03 | 2005-06-09 | 2006-07-29 | 0 | 0 | 00 | PK | I21 | 000 | PK | I2112 |  |  | I |  | B | P |  |  |
| PK000I115B | Issue RFQ - Annubars | 5d | 2005-05-23 A | 2005-05-26 A | EK000IC025 | 100% | 2005-06-03 | 2005-06-09 | 2006-07-29 | 0 | 0 | 00 | PK | I21 | 000 | PK | I2115 |  |  | I |  | B | P |  |  |
| PK000I116B | Issue RFQ - Wedge Flow Meters | 5d | 2005-05-23 A | 2005-05-26 A | EK000IC025 | 100% | 2005-06-03 | 2005-06-09 | 2006-07-29 | 0 | 0 | 00 | PK | I21 | 000 | PK | I2116 |  |  | I |  | B | P |  |  |
| PK000I616B | Issue RFQ - Steam Drum Lvl Gauges | 5d | 2005-05-23 A | 2005-05-26 A | EK000IC025 | 100% | 2005-06-03 | 2005-06-09 | 2006-07-29 | 0 | 0 | 00 | PK | I16 | 000 | PK | I1616 |  |  | I |  | B | P |  |  |
| PK000I623B | Issue RFQ - Multi-Point Thermocouples | 5d | 2005-05-23 A | 2005-05-26 A | EK000IC025 | 100% | 2005-06-03 | 2005-06-09 | 2006-07-29 | 0 | 0 | 00 | PK | I16 | 000 | PK | I1623 |  |  | I |  | B | P |  |  |
| PK000MB81I | Eval Bids & Issue Recmd MB810 | 5d | 2005-05-23 A | 2005-05-26 A | EK000MB81D, PK000MB81H | 100% | 2005-05-27 | 2005-06-03 | 2006-07-29 | 0 | 0 | 00 | PK | MB8 | 000 | PK | MB810 |  | CE | M | X | E | P |  |  |
| PK000MD34M | Requote/Bid Condition/Final Tab - MD304 | 20d | 2005-05-23 A | 2005-06-03 A | EK000MD34F | 100% | 2005-05-20 | 2005-06-17 | 2006-07-29 | 0 | 0 | 00 | PK | MD3 | 000 | PK | MD304 |  | CE | M | X | G | P |  |  |

Notes:
- PK000MJ21I: P3 Activity Log Info: Selected MHI
- PK000MBP1I: P3 Activity Log Info: L.O.I Issued 13 Apr 05
- PK000MJ22I: P3 Activity Log Info: Selected Siemens
- PK000MJ35I: P3 Activity Log Info: Using ISSP (Goulds) / Not Required
- PK000MJ36I: P3 Activity Log Info: Using ISSP (Goulds) / Not / Required

| ID | Activity | Duration | Start | Finish | Predecessors | Complete | Planned start | Planned finish | zData Date | PCA Criticality Index | PCA Duration Sensitivity | EB02 - UNIT | EB01 - RESP | EB06 - WORK OP | EB03 - AREA | EB05 - DISCIPLINE | EB07 - REQN | EB10 - KEY | EB04 - CLASS | EB11 - FLAG | EB09 - IPMS | EB00 - EPC | EB08 - TAG | EB14 - RISK | user_integer2 |
| --- | --- | --- | --- | --- | --- | --- | --- | --- | --- | --- | --- | --- | --- | --- | --- | --- | --- | --- | --- | --- | --- | --- | --- | --- | --- |
| PK000MD42M | Requote/Bid Condition/Final Tab - MD402 | 20d | 2005-05-23 A | 2005-05-31 A | EK000MD42F | 100% | 2005-05-31 | 2005-06-27 | 2006-07-29 | 0 | 0 | 00 | PK | MD4 | 000 | PK | MD402 | CE | M | X | G | P |  |  |  |
| PK000MD46I | Eval Bids & Issue Recmd MD411 | 5d | 2005-05-23 A | 2005-06-03 A | EM000MD46D, PK000MD46H | 100% | 2005-05-20 | 2005-05-26 | 2006-07-29 | 0 | 0 | 00 | PK | MD4 | 000 | PK | MD411 | PE | M | X | E | P |  |  |  |
| PK000MJ32I | Eval Bids & Issue Recmd MJ302 | 5d | 2005-05-23 A | 2005-06-03 A | EK000MJ32D | 100% | 2005-06-27 | 2005-07-05 | 2006-07-29 | 0 | 0 | 00 | PK | MJ3 | 000 | PK | MJ302 | FE | M | X | E | P | 107JA |  |  |
| PK000ML31I | Eval Bids & Issue Recmd ML313 | 5d | 2005-05-23 A | 2005-05-27 A | EK000ML31D | 100% | 2005-06-27 | 2005-07-05 | 2006-07-29 | 0 | 0 | 00 | PK | ML3 | 000 | PK | ML313 | FE | M | X | E | P | 160L |  |  |
| PK000ML42I | Eval Bids & Issue Recmd ML420 | 5d | 2005-05-23 A | 2005-05-27 A | EK000ML42D | 100% | 2005-06-07 | 2005-06-13 | 2006-07-29 | 0 | 0 | 00 | PK | ML4 | 000 | PK | ML420 | NE | M | X | E | P |  |  |  |
| PK000MU35I | Eval Bids & Issue Recmd MU350 | 5d | 2005-05-23 A | 2005-05-27 A | EK000MU35D | 100% | 2005-06-27 | 2005-07-05 | 2006-07-29 | 0 | 0 | 00 | PK | MU3 | 000 | PK | MU350 | FE | M | X | E | P | 101U |  |  |
| PK000MD32M | Requote/Bid Condition/Final Tab - MD302 | 20d | 2005-05-23 A | 2005-06-10 A | EK000MD32F | 100% | 2005-05-23 | 2005-06-20 | 2006-07-29 | 0 | 0 | 00 | PK | MD3 | 000 | PK | MD302 | CE | M | X | G | P | 104D1 |  |  |
| PK000MD41I | Eval Bids & Issue Recmd MD401 | 5d | 2005-05-24 A | 2005-06-02 A | EK000MD41D, PK000MD41H | 100% | 2005-05-20 | 2005-05-26 | 2006-07-29 | 0 | 0 | 00 | PK | MD4 | 000 | PK | MD401 | CE | M | X | E | P | 101F |  |  |
| PK000MC21I | Eval Bids & Issue Recmd MC210 | 5d | 2005-05-24 A | 2005-06-24 A | EK000MC21D, PK000MC21H | 100% | 2005-05-24 | 2005-05-31 | 2006-07-29 | 0 | 0 | 00 | PK | MC2 | 000 | PK | MC210 | PE | M | X | E | P |  |  |  |
| PK000MC23I | Eval Bids & Issue Recmd MC230 | 5d | 2005-05-24 A | 2005-06-24 A | EK000MC23D, PK000MC23H | 100% | 2005-05-24 | 2005-05-31 | 2006-07-29 | 0 | 0 | 00 | PK | MC2 | 000 | PK | MC230 | PE | M | X | E | P |  |  |  |
| PK000MD34I | Eval Bids & Issue Recmd MD304 | 5d | 2005-05-24 A | 2005-06-10 A | EK000MD34D, PK000MD34H | 100% | 2005-05-24 | 2005-05-31 | 2006-07-29 | 0 | 0 | 00 | PK | MD3 | 000 | PK | MD304 | CE | M | X | E | P |  |  |  |
| PK000I611B | Issue RFQ - Pressure Gauges | 5d | 2005-05-25 A | 2005-05-31 A | EK000IC025 | 100% | 2005-06-03 | 2005-06-09 | 2006-07-29 | 0 | 0 | 00 | PK | I16 | 000 | PK | I1611 |  | I |  | B | P |  |  |  |
| PK000I121B | Issue RFQ - Vortex Meters | 5d | 2005-05-26 A | 2005-06-01 A | EK000IC025 | 100% | 2005-06-03 | 2005-06-09 | 2006-07-29 | 0 | 0 | 00 | PK | I21 | 000 | PK | I2121 |  | I |  | B | P |  |  |  |
| PK000I122B | Issue RFQ - Coriolis Meters | 5d | 2005-05-26 A | 2005-06-01 A | EK000IC025 | 100% | 2005-06-03 | 2005-06-09 | 2006-07-29 | 0 | 0 | 00 | PK | I21 | 000 | PK | I2122 |  | I |  | B | P |  |  |  |
| PK000I124B | Issue RFQ - Rotameters | 5d | 2005-05-26 A | 2005-06-01 A | EK000IC025 | 100% | 2005-06-03 | 2005-06-09 | 2006-07-29 | 0 | 0 | 00 | PK | I21 | 000 | PK | I2124 |  | I |  | B | P |  |  |  |
| PK000I127B | Magnetic Flow Meters - Issue RFQ | 5d | 2005-05-26 A | 2005-06-01 A | EK000IC025 | 100% | 2005-06-03 | 2005-06-09 | 2006-07-29 | 0 | 0 | 00 | PK | I21 | 000 | PK | I2127 |  | I |  | B | P |  |  |  |
| PK000I612B | Issue RFQ - Differential Pressure Gauges | 5d | 2005-05-26 A | 2005-05-31 A | EK000IC025 | 100% | 2005-06-03 | 2005-06-09 | 2006-07-29 | 0 | 0 | 00 | PK | I16 | 000 | PK | I1612 |  | I |  | B | P |  |  |  |
| PK000I618B | Issue RFQ - Temperature Gauges | 5d | 2005-05-26 A | 2005-05-31 A | EK000IC025 | 100% | 2005-06-03 | 2005-06-09 | 2006-07-29 | 0 | 0 | 00 | PK | I16 | 000 | PK | I1618 |  | I |  | B | P |  |  |  |
| PK000I621B | Issue RFQ - Temperature Elements | 5d | 2005-05-26 A | 2005-05-31 A | EK000IC025 | 100% | 2005-06-03 | 2005-06-09 | 2006-07-29 | 0 | 0 | 00 | PK | I16 | 000 | PK | I1621 |  | I |  | B | P |  |  |  |
| PK000ML42M | Requote/Bid Condition/Final Tab - ML420 | 20d | 2005-05-26 A | 2005-11-17 A | EK000ML42F | 100% | 2005-06-24 | 2005-07-25 | 2006-07-29 | 0 | 0 | 00 | PK | ML4 | 000 | PK | ML420 | NE | M | X | G | P |  |  |  |
| + | MB333 - Issue RFQ 101-B | 3d | 2005-05-27 A | 2005-06-02 A | EK000MB33F | 100% | 2005-06-06 | 2005-06-08 | 2006-07-29 | 0 | 0 | 00 | PK | MB3 | 000 | PK | MB333 | CE | M | X | B | P | 101B | 04 |  |
| PK000I110C | Receive Quotes - Orific Plates | 15d | 2005-05-27 A | 2005-06-20 A | PK000I110B | 100% | 2005-06-10 | 2005-06-30 | 2006-07-29 | 0 | 0 | 00 | PK | I21 | 000 | PK | I2110 |  | I |  | C | P |  |  |  |
| PK000I112C | Receive Quotes - Venturis | 15d | 2005-05-27 A | 2005-07-14 A | PK000I112B | 100% | 2005-06-10 | 2005-06-30 | 2006-07-29 | 0 | 0 | 00 | PK | I21 | 000 | PK | I2112 |  | I |  | C | P |  |  |  |
| PK000I115C | Receive Quotes - Annubars | 15d | 2005-05-27 A | 2005-06-14 A | PK000I115B | 100% | 2005-06-10 | 2005-06-30 | 2006-07-29 | 0 | 0 | 00 | PK | I21 | 000 | PK | I2115 |  | I |  | C | P |  |  |  |
| PK000I116C | Receive Quotes - Wedge Flow Meters | 15d | 2005-05-27 A | 2005-06-15 A | PK000I116B | 100% | 2005-06-10 | 2005-06-30 | 2006-07-29 | 0 | 0 | 00 | PK | I21 | 000 | PK | I2116 |  | I |  | C | P |  |  |  |
| PK000I616C | Receive Quotes - Steam Drum Lvl Gauges | 15d | 2005-05-27 A | 2005-06-16 A | PK000I616B | 100% | 2005-06-10 | 2005-06-30 | 2006-07-29 | 0 | 0 | 00 | PK | I16 | 000 | PK | I1616 |  | I |  | C | P |  |  |  |
| PK000I617B | Issue RFQ - Magnetic Lvl Gauges | 5d | 2005-05-27 A | 2005-06-01 A | EK000IC025 | 100% | 2005-06-03 | 2005-06-09 | 2006-07-29 | 0 | 0 | 00 | PK | I16 | 000 | PK | I1617 |  | I |  | B | P |  |  |  |
| PK000I623C | Receive Quotes - Multi-Point Thermocouples | 15d | 2005-05-27 A | 2005-08-15 A | PK000I623B | 100% | 2005-06-03 | 2005-06-23 | 2006-07-29 | 0 | 0 | 00 | PK | I16 | 000 | PK | I1623 |  | I |  | C | P |  |  |  |
| PK000MJ31I | Eval Bids & Issue Recmd MJ301 | 5d | 2005-05-27 A | 2005-06-03 A | EK000MJ31D | 100% | 2005-06-27 | 2005-07-05 | 2006-07-29 | 0 | 0 | 00 | PK | MJ3 | 000 | PK | MJ301 | FE | M | X | E | P | 104J |  |  |
| PK000MB51I | Eval Bids & Issue Recmd MB511 | 5d | 2005-05-27 A | 2005-06-14 A | EK000MB51D, PK000MB51H | 100% | 2005-05-27 | 2005-06-03 | 2006-07-29 | 0 | 0 | 00 | PK | MB5 | 000 | PK | MB511 | CE | M | X | E | P | 101B |  | 4 |
| PK000MB62I | Eval Bids & Issue Recmd MB621 | 20d | 2005-05-27 A | 2005-05-30 A | EK000MB62D, PK000MB62H | 100% | 2005-05-27 | 2005-06-24 | 2006-07-29 | 0 | 0 | 00 | PK | MB6 | 000 | PK | MB621 | CE | M | X | E | P | 101BJ1 | 04 |  |
| PK000MD41M | Final Tab/Recmd - MD401 | 20d | 2005-05-27 A | 2005-08-23 A | EK000MD41F | 100% | 2005-05-27 | 2005-06-24 | 2006-07-29 | 0 | 0 | 00 | PK | MD4 | 000 | PK | MD401 | CE | M | X | G | P | 101F |  |  |
| PK000MD43I | Eval Bids & Issue Recmd MD403 | 5d | 2005-05-27 A | 2005-06-03 A | EK000MD43D, PK000MD43H | 100% |  |  | 2006-07-29 | 0 | 0 | 00 | PK | MD4 | 000 | PK | MD403 | CE | M | X | E | P | 106F |  |  |
| PK000MD43M | Requote/Bid Condition/Final Tab - MD403 | 20d | 2005-05-27 A | 2005-06-03 A | EK000MD43F | 100% | 2005-05-27 | 2005-06-24 | 2006-07-29 | 0 | 0 | 00 | PK | MD4 | 000 | PK | MD403 | CE | M | X | G | P | 106F |  |  |
| PK000MJ34G | Issue MJ304 RFQ | 3d | 2005-05-27 A | 2005-05-31 A | EK000YA002 SS | 100% | 2005-05-27 | 2005-06-01 | 2006-07-29 | 0 | 0 | 00 | PK | MJ3 | 000 | PK | MJ304 | FE | M | X | B | P | 2003J |  |  |
| PK000ML50I | Eval Bids & Issue Recmd ML500 | 5d | 2005-05-27 A | 2005-06-03 A | EK000ML50D | 100% |  |  | 2006-07-29 | 0 | 0 | 00 | PK | ML5 | 000 | PK | ML500 | FE | M | X | E | P | 2003L |  |  |
| PK000MU35M | Requote/Bid Condition/Final Tab - MU350 | 20d | 2005-05-27 A | 2005-08-15 A | EK000MU35F | 100% | 2005-05-27 | 2005-06-24 | 2006-07-29 | 0 | 0 | 00 | PK | MU3 | 000 | PK | MU350 | FE | M | X | G | P | 101U |  |  |
| PK000MJ39M | Requote/Bid Condition/Final Tab - MJ391/MJ392 | 10d | 2005-05-30 A | 2006-01-20 A | EK000MJ39F | 100% | 2005-06-03 | 2005-06-16 | 2006-07-29 | 0 | 0 | 00 | PK | MJ3 | 000 | PK | MJ391 | PE | M | X | G | P |  |  |  |
| PK000ML50M | Requote/Bid Condition/Final Tab - ML500 | 20d | 2005-05-30 A | 2005-09-07 A | EK000ML50F | 100% | 2005-05-27 | 2005-06-24 | 2006-07-29 | 0 | 0 | 00 | PK | ML5 | 000 | PK | ML500 | FE | M | X | G | P | 2003L |  |  |
| PK000I611C | Receive Quotes - Pressure Gauges | 15d | 2005-06-01 A | 2005-06-21 A | PK000I611B | 100% | 2005-06-10 | 2005-06-30 | 2006-07-29 | 0 | 0 | 00 | PK | I16 | 000 | PK | I1611 |  | I |  | C | P |  |  |  |
| PK000I612C | Receive Quotes - Differential Pressure Gauges | 15d | 2005-06-01 A | 2005-06-21 A | PK000I612B | 100% | 2005-06-10 | 2005-06-30 | 2006-07-29 | 0 | 0 | 00 | PK | I16 | 000 | PK | I1612 |  | I |  | C | P |  |  |  |
| PK000I618C | Receive Quotes - Temperature Gauges | 15d | 2005-06-01 A | 2005-08-11 A | PK000I618B | 100% | 2005-06-10 | 2005-06-30 | 2006-07-29 | 0 | 0 | 00 | PK | I16 | 000 | PK | I1618 |  | I |  | C | P |  |  |  |
| PK000I621C | Receive Quotes - Temperature Elements | 15d | 2005-06-01 A | 2005-08-10 A | PK000I621B | 100% | 2005-06-03 | 2005-06-23 | 2006-07-29 | 0 | 0 | 00 | PK | I16 | 000 | PK | I1621 |  | I |  | C | P |  |  |  |
| PK000MJ34H | Receive Quotes MJ304 | 15d | 2005-06-01 A | 2005-06-01 A | PK000MJ34G | 100% | 2005-06-03 | 2005-06-23 | 2006-07-29 | 0 | 0 | 00 | PK | MJ3 | 000 | PK | MJ304 | FE | M | X | C | P | 2003J |  |  |
| PK000ML51G | Issue ML512 RFQ | 3d | 2005-06-01 A | 2005-06-01 A | EK000ML51F | 100% | 2005-06-03 | 2005-06-07 | 2006-07-29 | 0 | 0 | 00 | PK | ML5 | 000 | PK | ML512 | FE | M | X | B | P | 2102L |  |  |
| PK000MB41I | Eval Bids & Issue Recmd MB410 | 5d | 2005-06-01 A | 2005-06-20 A | EK000MB41D, PK000MB41H | 100% | 2005-06-01 | 2005-06-07 | 2006-07-29 | 0 | 0 | 00 | PK | MB4 | 000 | PK | MB410 | CE | M | X | E | P | 101B | 04 | 4 |
| PK000MBP4I | Eval Bids & Issue Recmd 101-B Cast Material | 5d | 2005-06-01 A | 2005-06-09 A | EK000MBP4D, PK000MBP4H | 100% | 2005-06-01 | 2005-06-07 | 2006-07-29 | 0 | 0 | 00 | PK | MB3 | 000 | PK | MB312 | CE | M | X | E | P | 101B | 04 |  |
| PK000I121C | Receive Quotes - Vortex Meters | 15d | 2005-06-02 A | 2005-06-20 A | PK000I121B | 100% | 2005-06-10 | 2005-06-30 | 2006-07-29 | 0 | 0 | 00 | PK | I21 | 000 | PK | I2121 |  | I |  | C | P |  |  |  |
| PK000I122C | Receive Quotes - Coriolis Meters | 15d | 2005-06-02 A | 2005-06-20 A | PK000I122B | 100% | 2005-06-10 | 2005-06-30 | 2006-07-29 | 0 | 0 | 00 | PK | I21 | 000 | PK | I2122 |  | I |  | C | P |  |  |  |
| PK000I124C | Receive Quotes - Rotameters | 15d | 2005-06-02 A | 2005-06-20 A | PK000I124B | 100% | 2005-06-10 | 2005-06-30 | 2006-07-29 | 0 | 0 | 00 | PK | I21 | 000 | PK | I2124 |  | I |  | C | P |  |  |  |
| PK000I127C | Magnetic Flow Meters - Receive Quotes | 15d | 2005-06-02 A | 2005-06-20 A | PK000I127B | 100% | 2005-06-10 | 2005-06-30 | 2006-07-29 | 0 | 0 | 00 | PK | I21 | 000 | PK | I2127 |  | I |  | C | P |  |  |  |
| PK000I617C | Receive Quotes - Magnetic Lvl Gauges | 15d | 2005-06-02 A | 2005-06-21 A | PK000I617B | 100% | 2005-06-10 | 2005-06-30 | 2006-07-29 | 0 | 0 | 00 | PK | I16 | 000 | PK | I1617 |  | I |  | C | P |  |  |  |
| PK000MJ35J | Final Negotiate/Interim Award - MJ305 | 10d | 2005-06-02 A | 2005-09-22 A | EK000EB015 | 100% | 2005-08-29 | 2005-09-09 | 2006-07-29 | 0 | 0 | 00 | PK | MJ3 | 000 | PK | MJ305 | CE | M |  | G | P |  |  |  |
| PK000ML51H | Receive Quotes ML512 | 15d | 2005-06-02 A | 2005-07-18 A | PK000ML51G | 100% | 2005-06-08 | 2005-06-28 | 2006-07-29 | 0 | 0 | 00 | PK | ML5 | 000 | PK | ML512 | FE | M | X | C | P | 2102L |  |  |
| PK000MU61I | Eval Bids & Issue Recmd MU611 | 5d | 2005-06-03 A | 2005-08-25 A | EK000MU61D | 100% | 2005-07-26 | 2005-08-01 | 2006-07-29 | 0 | 0 | 00 | PK | MU6 | 000 | PK | MU611 | PE | M | X | E | P | 2101U |  |  |
| PK000MD33I | Eval Bids & Issue Recmd MD303 | 5d | 2005-06-03 A | 2005-06-09 A | EK000MD33D, PK000MD33H | 100% |  |  | 2006-07-29 | 0 | 0 | 00 | PK | MD3 | 000 | PK | MD303 | FE | M | X | E | P | 105D |  |  |
| PK000MD32I | Eval Bids & Issue Recmd MD302 | 5d | 2005-06-06 A | 2005-06-10 A | PK000MD32H, EK000MD32D | 100% | 2005-06-20 | 2005-06-24 | 2006-07-29 | 0 | 0 | 00 | PK | MD3 | 000 | PK | MD302 | CE | M | X | E | P | 104D1 |  |  |
| PK000MJ34I | Eval Bids & Issue Recmd MJ304 | 5d | 2005-06-06 A | 2005-06-10 A | EK000MJ34D | 100% | 2005-07-05 | 2005-07-11 | 2006-07-29 | 0 | 0 | 00 | PK | MJ3 | 000 | PK | MJ304 | FE | M | X | E | P | 2003J |  |  |
| PK000PIA4A | Product Line Piping - Issue REQ/RFQ to Vend | 20d | 2005-06-06 A | 2005-06-15 A | EK000PI100 | 100% | 2005-05-11 | 2005-06-08 | 2006-07-29 | 0 | 0 | 00 | PK | P00 | 000 | PK | PIA41 |  | P |  | B | P |  |  |  |
| PK000MB33H | MB333 - Receive Quotes 101-B | 15d | 2005-06-06 A | 2005-07-08 A | + | 100% | 2005-06-06 | 2005-06-24 | 2006-07-29 | 0 | 0 | 00 | PK | MB3 | 000 | PK | MB333 | CE | M | X | C | P | 101B | 04 | 8 |
| PK000MD31I | Eval Bids & Issue Recmd MD301 | 5d | 2005-06-06 A | 2005-06-10 A | EK000MD31D, PK000MD31H | 100% |  |  | 2006-07-29 | 0 | 0 | 00 | PK | MD3 | 000 | PK | MD301 | CE | M | X | E | P | 103D |  |  |
| PK000PIA1D | Bulk Piping A/G & U/G - Eval Bids/Issue Recmd | 15d | 2005-06-06 A | 2005-08-01 A | PK000PIA1B, PK000PIA1C FF+3d, EK000PE015, PK000MM025 FF | 100% | 2005-06-06 | 2005-06-24 | 2006-07-29 | 0 | 0 | 00 | PK | P00 | 000 | PK | PIA11 |  | P | X | E | P |  |  |  |
| PK000PTA0A | Engineered Pipe Supports - Inquiry REQ/RFQ | 20d | 2005-06-07 A | 2005-07-05 A | EK02API030 | 100% | 2006-04-12 | 2006-05-09 | 2006-07-29 | 0 | 0 | 00 | PK | P60 | 000 | PK | PTA02 |  | P |  | B | P |  |  |  |
| PK000MJ31M | Requote/Bid Condition/Final Tab - MJ301 | 20d | 2005-06-09 A | 2005-08-25 A | EK000MJ31F, PK000MJ31I | 100% | 2005-07-06 | 2005-08-02 | 2006-07-29 | 0 | 0 | 00 | PK | MJ3 | 000 | PK | MJ301 | FE | M | X | G | P | 104J |  |  |
| PK000MJ32M | Requote/Bid Condition/Final Tab - MJ302 | 20d | 2005-06-09 A | 2005-08-16 A | EK000MJ32F SS | 100% | 2005-07-05 | 2005-08-01 | 2006-07-29 | 0 | 0 | 00 | PK | MJ3 | 000 | PK | MJ302 | FE | M | X | G | P | 107JA |  |  |
| PK000MU30I | Eval Bids & Issue Recmd MU300 | 5d | 2005-06-10 A | 2005-11-28 A | EK000MU30D FF+5d | 100% | 2005-08-01 | 2005-08-05 | 2006-07-29 | 0 | 0 | 00 | PK | MU3 | 000 | PK | MU300 | FE | M | X | E | P | 2102U | 09 | 5 |
| PK000MB63I | Eval Bids & Issue Recmd MB630 | 5d | 2005-06-13 A | 2005-08-11 A | EK000MB63D, PK000MB63H | 100% | 2005-06-03 | 2005-06-09 | 2006-07-29 | 0 | 0 | 00 | PK | MB6 | 000 | PK | MB630 | CE | M | X | E | P | 101BL1 | 04 | 8 |
| PK000MBP3I | Eval Bids & Issue Recmd 101-B Pressure Parts | 5d | 2005-06-13 A | 2005-06-17 A | EK000MBP3D, PK000MBP3H | 100% | 2005-06-15 | 2005-06-21 | 2006-07-29 | 0 | 0 | 00 | PK | MB3 | 000 | PK | MB311 | CE | M | X | E | P | 101B | 04 |  |
| PK000MD47G | Issue MD406 RFQ | 3d | 2005-06-13 A | 2005-06-13 A | EM000MD47F | 100% | 2005-06-03 | 2005-06-07 | 2006-07-29 | 0 | 0 | 00 | PK | MD4 | 000 | PK | MD406 | CE | M | X | B | P | 103F |  |  |
| PK000MD33M | Final Tab/Recmd - MD303 | 5d | 2005-06-13 A | 2005-08-23 A | EK000MD33F | 100% | 2005-06-13 | 2005-06-17 | 2006-07-29 | 0 | 0 | 00 | PK | MD3 | 000 | PK | MD303 | FE | M | X | G | P | 105D |  |  |

Notes:
- PK000MD47G: P3 Activity Log Info: 103-F CO2 Stripper Cond. KO / Drum

| ID | Activity | Duration | Start | Finish | Predecessors | Complete | Planned start | Planned finish | zData Date | PCA Criticality Index | PCA Duration Sensitivity | EB02 - UNIT | EB01 - RESP | EB06 - WORK OP | EB03 - AREA | EB05 - DISCIPLINE | EB07 - REQN | EB08 - TAG | EB10 - KEY | EB04 - CLASS | EB11 - FLAG | EB09 - IPMS | EB00 - EPC | user_integer2 | EB14 - RISK |
| --- | --- | --- | --- | --- | --- | --- | --- | --- | --- | --- | --- | --- | --- | --- | --- | --- | --- | --- | --- | --- | --- | --- | --- | --- | --- |
| PK000MD47H | Receive Quotes MD406 | 15d | 2005-06-14 A | 2005-07-07 A | PK000MD47G | 100% | 2005-06-08 | 2005-06-28 | 2006-07-29 | 0 | 0 | 00 | PK | MD4 | 000 | PK | MD406 | 103F | CE | M | X | C | P |  |  |
| PK000ML33G | Issue ML330 RFQ | 3d | 2005-06-14 A | 2005-06-15 A | EK000ML33F | 100% | 2005-06-20 | 2005-06-22 | 2006-07-29 | 0 | 0 | 00 | PK | ML3 | 000 | PK | ML330 | 2101L | NE | M | X | B | P |  |  |
| PK000I115E | Eval Bids / Issue Recmd - Annubars | 5d | 2005-06-15 A | 2005-08-31 A | EK000I115D | 100% | 2005-07-07 | 2005-07-13 | 2006-07-29 | 0 | 0 | 00 | PK | I21 | 000 | PK | I2115 |  |  | I |  | E | P |  |  |
| PK000I116E | Eval Bids / Issue Recmd - Wedge Flow Meters | 5d | 2005-06-16 A | 2005-08-31 A | EK000I116D | 100% | 2005-07-07 | 2005-07-13 | 2006-07-29 | 0 | 0 | 00 | PK | I21 | 000 | PK | I2116 |  |  | I |  | E | P |  |  |
| PK000ML33H | Receive Quotes ML330 | 15d | 2005-06-16 A | 2005-08-10 A | PK000ML33G | 100% | 2005-06-23 | 2005-07-15 | 2006-07-29 | 0 | 0 | 00 | PK | ML3 | 000 | PK | ML330 | 2101L | NE | M | X | C | P |  |  |
| PK000PIA4B | Product Line Piping - Receive Bids | 10d | 2005-06-16 A | 2005-07-07 A | PK000PIA4A | 100% | 2005-06-09 | 2005-06-22 | 2006-07-29 | 0 | 0 | 00 | PK | P00 | 000 | PK | PIA41 |  |  | P | X | C | P |  |  |
| PK000MU33I | Eval Bids & Issue Recmd MU330 | 5d | 2005-06-20 A | 2005-10-10 A | EK000MU33D | 100% | 2005-08-01 | 2005-08-05 | 2006-07-29 | 0 | 0 | 00 | PK | MU3 | 000 | PK | MU330 | 2001U | FE | M | Y | E | P |  |  |
| PK000I110E | Eval Bids / Issue Recmd - Orific Plates | 5d | 2005-06-21 A | 2005-08-31 A | EK000I110D | 100% | 2005-07-07 | 2005-07-13 | 2006-07-29 | 0 | 0 | 00 | PK | I21 | 000 | PK | I2110 |  |  | I |  | E | P |  |  |
| PK000I121E | Eval Bids / Issue Recmd - Vortex Meters | 5d | 2005-06-21 A | 2005-08-31 A | EK000I121D | 100% | 2005-07-18 | 2005-07-22 | 2006-07-29 | 0 | 0 | 00 | PK | I21 | 000 | PK | I2121 |  |  | I |  | E | P |  |  |
| PK000I122E | Eval Bids / Issue Recmd - Coriolis Meters | 5d | 2005-06-21 A | 2005-08-31 A | EK000I122D | 100% | 2005-07-25 | 2005-07-29 | 2006-07-29 | 0 | 0 | 00 | PK | I21 | 000 | PK | I2122 |  |  | I |  | E | P |  |  |
| PK000I124E | Eval Bids / Issue Recmd - Rotameters | 5d | 2005-06-21 A | 2005-08-31 A | EK000I124D | 100% | 2005-07-25 | 2005-07-29 | 2006-07-29 | 0 | 0 | 00 | PK | I21 | 000 | PK | I2124 |  |  | I |  | E | P |  |  |
| PK000I616E | Eval Bids / Issue Recmd - Steam Drum Lvl Gauges | 5d | 2005-06-21 A | 2005-08-31 A | EK000I616D | 100% | 2005-07-11 | 2005-07-15 | 2006-07-29 | 0 | 0 | 00 | PK | I16 | 000 | PK | I1616 |  |  | I |  | E | P |  |  |
| PK000I621E | Eval Bids / Issue Recmd - Temperature Elements | 5d | 2005-06-21 A | 2005-08-31 A | EK000I621D | 100% | 2005-07-18 | 2005-07-22 | 2006-07-29 | 0 | 0 | 00 | PK | I16 | 000 | PK | I1621 |  |  | I |  | E | P |  |  |
| PK000I611E | Eval Bids / Issue Recmd - Pressure Gauges | 5d | 2005-06-22 A | 2005-08-31 A | EK000I611D | 100% | 2005-07-11 | 2005-07-15 | 2006-07-29 | 0 | 0 | 00 | PK | I16 | 000 | PK | I1611 |  |  | I |  | E | P |  |  |
| PK000I617E | Eval Bids / Issue Recmd - Magnetic Lvl Gauges | 5d | 2005-06-22 A | 2005-08-31 A | EK000I617D | 100% | 2005-07-11 | 2005-07-15 | 2006-07-29 | 0 | 0 | 00 | PK | I16 | 000 | PK | I1617 |  |  | I |  | E | P |  |  |
| PK000I131E | Eval Bids / Issue Recmd - Transmitters | 9d | 2005-06-24 A | 2005-06-30 A | EK000I131D | 100% | 2005-06-20 | 2005-06-30 | 2006-07-29 | 0 | 0 | 00 | PK | I13 | 000 | PK | I1310 |  |  | I |  | E | P |  |  |
| PK000I210E | 000 Control Valves - Eval Bids / Issue Recmd | 9d | 2005-06-24 A | 2005-06-30 A | EK000I210D | 100% | 2005-06-20 | 2005-06-30 | 2006-07-29 | 0 | 0 | 00 | PK | I22 | 000 | PK | I2210 |  |  | I |  | E | P |  |  |
| PK000MJ75G | Issue MJ750 RFQ | 3d | 2005-06-27 A | 2005-06-28 A | EK000MJ75F | 100% | 2005-06-28 | 2005-06-30 | 2006-07-29 | 0 | 0 | 00 | PK | MJ7 | 000 | PK | MJ750 |  | PE | M | Y | B | P |  |  |
| PK000I612E | Eval Bids / Issue Recmd - Differential Pressure Gauges | 5d | 2005-06-27 A | 2005-08-31 A | EK000I612D | 100% | 2005-06-27 | 2005-07-05 | 2006-07-29 | 0 | 0 | 00 | PK | I16 | 000 | PK | I1612 |  |  | I |  | E | P |  |  |
| PK000MJ75H | Receive Quotes MJ750 | 15d | 2005-06-28 A | 2005-06-29 A | PK000MJ75G | 100% | 2005-07-05 | 2005-07-25 | 2006-07-29 | 0 | 0 | 00 | PK | MJ7 | 000 | PK | MJ750 |  | PE | M | Y | C | P |  |  |
| PK000MJ75I | Eval Bids & Issue Recmd MJ750 | 5d | 2005-06-29 A | 2005-06-30 A | EK000MJ75D | 100% | 2005-08-02 | 2005-08-08 | 2006-07-29 | 0 | 0 | 00 | PK | MJ7 | 000 | PK | MJ750 |  | PE | M |  | E | P |  |  |
| PK000MJ37G | Issue MJ340 RFQ | 5d | 2005-06-30 A | 2005-07-12 A | EK000MJ37F | 100% | 2005-06-30 | 2005-07-08 | 2006-07-29 | 0 | 0 | 00 | PK | MJ3 | 000 | PK | MJ340 |  | NE | M | X | B | P |  |  |
| PK000I230B | Issue RFQ - On/Off Valves | 5d | 2005-07-05 A | 2005-07-07 A | EK000I230A | 100% | 2005-07-18 | 2005-07-22 | 2006-07-29 | 0 | 0 | 00 | PK | I22 | 000 | PK | I2230 |  |  | I |  | B | P |  |  |
| PK000PTA0B | Engineered Pipe Supports - Receive Bids | 10d | 2005-07-05 A | 2005-07-26 A | PK000PTA0A | 100% | 2006-05-10 | 2006-05-23 | 2006-07-29 | 0 | 0 | 00 | PK | P60 | 000 | PK | PTA02 |  |  | P | X | C | P |  |  |
| PK000I220B | Issue RFQ - MOV's | 5d | 2005-07-05 A | 2005-07-07 A | EK000I220A | 100% | 2005-07-05 | 2005-07-11 | 2006-07-29 | 0 | 0 | 00 | PK | I22 | 000 | PK | I2220 |  |  | I |  | B | P |  |  |
| PK000I221B | 000 Everest Control Valves - Issue RFQ | 5d | 2005-07-07 A | 2005-07-07 A | EK000I221A | 100% | 2005-09-26 | 2005-09-30 | 2006-07-29 | 0 | 0 | 00 | PK | I22 | 000 | PK | I2211 |  |  | I |  | B | P |  |  |
| PK000I221C | 000 Everest Control Valves - Receive Quotes | 15d | 2005-07-07 A | 2005-07-26 A | PK000I221B | 100% | 2005-10-03 | 2005-10-21 | 2006-07-29 | 0 | 0 | 00 | PK | I22 | 000 | PK | I2211 |  |  | I |  | C | P |  |  |
| PK000I220C | Receive Quotes - MOV's | 21d | 2005-07-08 A | 2005-08-02 A | PK000I220B | 100% | 2005-07-12 | 2005-08-09 | 2006-07-29 | 0 | 0 | 00 | PK | I22 | 000 | PK | I2220 |  |  | I |  | C | P |  |  |
| PK000I230C | Receive Quotes -On/Off Valves | 15d | 2005-07-08 A | 2005-08-01 A | PK000I230B | 100% | 2005-07-25 | 2005-08-12 | 2006-07-29 | 0 | 0 | 00 | PK | I22 | 000 | PK | I2230 |  |  | I |  | C | P |  |  |
| PK000MB33I | MB333 - Eval Bids & Issue Recmd 101-B | 5d | 2005-07-08 A | 2005-08-25 A | EK000MB33D, PK000MB33H | 100% | 2005-07-18 | 2005-07-22 | 2006-07-29 | 0 | 0 | 00 | PK | MB3 | 000 | PK | MB333 | 101B | CE | M |  | E | P | 5 | 04 |
| PK000MD47I | Eval Bids & Issue Recmd MD406 | 5d | 2005-07-08 A | 2005-10-20 A | EM000MD47D, PK000MD47H | 100% | 2005-07-18 | 2005-07-22 | 2006-07-29 | 0 | 0 | 00 | PK | MD4 | 000 | PK | MD406 | 103F | CE | M | Y | E | P |  |  |
| PK000MJ73G | Issue MJ730 RFQ | 3d | 2005-07-11 A | 2005-07-18 A | EK000MJ73F | 100% | 2005-07-11 | 2005-07-13 | 2006-07-29 | 0 | 0 | 00 | PK | MJ7 | 000 | PK | MJ730 | 2303J | PE | M | X | B | P |  |  |
| PK000MJ37F | Issue MJ307 RFQ | 3d | 2005-07-13 A | 2005-07-22 A | PK000MJ37Q | 100% | 2006-01-03 | 2006-01-05 | 2006-07-29 | 0 | 0 | 00 | PK | MJ3 | 000 | PK | MJ307 | 2100JA | CE | M | X | B | P |  |  |
| PK000MJ37H | Receive Quotes MJ340 | 20d | 2005-07-13 A | 2005-08-18 A | PK000MJ37G | 100% | 2005-07-11 | 2005-08-05 | 2006-07-29 | 0 | 0 | 00 | PK | MJ3 | 000 | PK | MJ340 |  | NE | M |  | C | P |  |  |
| PK000MD21G | Issue MD201 RFQ | 3d | 2005-07-18 A | 2005-07-20 A | EK000MD21F | 100% | 2005-07-12 | 2005-07-14 | 2006-07-29 | 0 | 0 | 00 | PK | MD2 | 000 | PK | MD201 |  | FE | M | X | B | P |  |  |
| PK000MB69G | Issue MB691 RFQ | 3d | 2005-07-19 A | 2005-07-26 A | EK000MB69F | 100% | 2005-06-27 | 2005-06-29 | 2006-07-29 | 0 | 0 | 00 | PK | MB6 | 000 | PK | MB691 | 101B | CE | M | X | B | P | 3 |  |
| PK000MJ73H | Receive Quotes MJ730 | 20d | 2005-07-19 A | 2005-09-06 A | PK000MJ73G | 100% | 2005-07-14 | 2005-08-10 | 2006-07-29 | 0 | 0 | 00 | PK | MJ7 | 000 | PK | MJ730 | 2303J | PE | M | X | C | P |  |  |
| PK000ML43G | Issue ML430 RFQ | 3d | 2005-07-19 A | 2005-07-22 A | EK000ML43F | 100% | 2005-07-20 | 2005-07-22 | 2006-07-29 | 0 | 0 | 00 | PK | ML4 | 000 | PK | ML430 | 110L | NE | M | X | B | P |  |  |
| PK000MJ33G | Issue MJ303 RFQ | 3d | 2005-07-19 A | 2005-07-22 A | EK000MJ33F | 100% | 2005-07-19 | 2005-07-21 | 2006-07-29 | 0 | 0 | 00 | PK | MJ3 | 000 | PK | MJ303 | 2202JA | FE | M | X | B | P |  |  |
| PK000MB65G | Issue MB622 RFQ | 3d | 2005-07-20 A | 2005-07-26 A | EK000MB65F | 100% | 2005-07-20 | 2005-07-22 | 2006-07-29 | 0 | 0 | 00 | PK | MB6 | 000 | PK | MB622 | 101B | CE | M |  | B | P | 3 |  |
| PK000PSA8D | 000 Relief Valves - Eval Bids / Issue Recmd | 5d | 2005-07-21 A | 2005-10-27 A | PK000PSA8C | 100% | 2006-02-27 | 2006-03-03 | 2006-07-29 | 0 | 0 | 00 | PK | I22 | 000 | PK | PSA08 |  | IR | P |  | E | P |  |  |
| PK000MC21M | Requote/Bid Condition/Final Tab - MC210 | 20d | 2005-07-22 A | 2005-10-28 A | EK000MC21P | 100% | 2005-06-27 | 2005-07-26 | 2006-07-29 | 0 | 0 | 00 | PK | MC2 | 000 | PK | MC210 |  | PE | M | X | G | P |  |  |
| PK000MC23M | Requote/Bid Condition/Final Tab - MC230 | 20d | 2005-07-22 A | 2005-10-28 A | EK000MC23P | 100% | 2005-06-27 | 2005-07-26 | 2006-07-29 | 0 | 0 | 00 | PK | MC2 | 000 | PK | MC230 |  | PE | M | Y | G | P |  |  |
| PK000MJ37D | Receive Quotes MJ307 | 15d | 2005-07-22 A | 2005-08-19 A | PK000MJ37F | 100% | 2006-01-03 | 2006-01-23 | 2006-07-29 | 0 | 0 | 00 | PK | MJ3 | 000 | PK | MJ307 | 2100JA | CE | M | X | C | P |  |  |
| PK000ML43H | Receive Quotes ML430 | 15d | 2005-07-22 A | 2005-08-10 A | PK000ML43G | 100% | 2005-07-25 | 2005-08-12 | 2006-07-29 | 0 | 0 | 00 | PK | ML4 | 000 | PK | ML430 | 110L | NE | M | X | C | P |  |  |
| PK000MU41I | Eval Bids & Issue Recmd MU410 | 5d | 2005-07-22 A | 2005-08-24 A | EK000MU41D | 100% | 2005-07-18 | 2005-07-22 | 2006-07-29 | 0 | 0 | 00 | PK | MU4 | 000 | PK | MU410 | 2002U | PE | M | X | E | P | 5 | 05 |
| PK000MJ33H | Receive Quotes MJ303 | 22d | 2005-07-22 A | 2005-09-29 A | PK000MJ33G | 100% | 2005-07-22 | 2005-08-22 | 2006-07-29 | 0 | 0 | 00 | PK | MJ3 | 000 | PK | MJ303 | 2202JA | FE | M | X | C | P |  |  |
| PK000MB68G | Issue MB692 RFQ | 3d | 2005-07-25 A | 2005-07-27 A | EK000MB68F | 100% | 2005-08-05 | 2005-08-09 | 2006-07-29 | 0 | 0 | 00 | PK | MB6 | 000 | PK | MB692 | 101B | CE | M |  | B | P | 3 |  |
| PK000MD21H | Receive Quotes for MD201 | 15d | 2005-07-25 A | 2005-08-10 A | PK000MD21G | 100% | 2005-07-15 | 2005-08-04 | 2006-07-29 | 0 | 0 | 00 | PK | MD2 | 000 | PK | MD201 |  | FE | M | X | C | P |  |  |
| PK000PIA1E | Bulk Piping A/G & U/G - Reconfirm Pricing | 6d | 2005-07-25 A | 2005-08-01 A | PK000PIA1D, EK000PI131 | 100% | 2005-10-17 | 2005-10-24 | 2006-07-29 | 0 | 0 | 00 | PK | P00 | 000 | PK | PIA11 |  |  | P |  | G | P |  |  |
| PK000MB66G | Issue MB660 RFQ | 3d | 2005-07-26 A | 2005-07-26 A | EK000MB66F | 100% | 2005-07-13 | 2005-07-15 | 2006-07-29 | 0 | 0 | 00 | PK | MB6 | 000 | PK | MB660 | 101B | CE | M | X | B | P | 3 |  |
| PK000MB66H | Receive Quotes for MB660 | 15d | 2005-07-26 A | 2005-08-26 A | PK000MB66G | 100% | 2005-08-02 | 2005-08-22 | 2006-07-29 | 0 | 0 | 00 | PK | MB6 | 000 | PK | MB660 | 101B | CE | M | X | C | P | 15 |  |
| PK000PTA0C | Engineered Pipe Supports - Eval Bids/Issue Recmd | 15d | 2005-07-26 A | 2005-09-08 A | PK000PTA0B | 100% | 2006-05-24 | 2006-06-13 | 2006-07-29 | 0 | 0 | 00 | PK | P60 | 000 | PK | PTA02 |  |  | P |  | E | P |  |  |
| PK000MB21G | Issue MB212 RFQ | 3d | 2005-07-27 A | 2005-08-22 A | EK000MB21F | 100% | 2005-06-27 | 2005-06-29 | 2006-07-29 | 0 | 0 | 00 | PK | MB2 | 000 | PK | MB212 | 101B | CE | M |  | B | P | 3 |  |
| PK000MB65H | Receive Quotes for MB622 | 15d | 2005-07-27 A | 2005-08-18 A | PK000MB65G | 100% | 2005-08-03 | 2005-08-23 | 2006-07-29 | 0 | 0 | 00 | PK | MB6 | 000 | PK | MB622 | 101B | CE | M |  | C | P | 15 |  |
| PK000MB69H | Receive Quotes for MB691 | 40d | 2005-07-27 A | 2005-08-22 A | PK000MB69G | 100% | 2005-06-30 | 2005-08-26 | 2006-07-29 | 0 | 0 | 00 | PK | MB6 | 000 | PK | MB691 | 101B | CE | M | X | C | P | 15 |  |
| PK000I127E | Magnetic Flow Meters - Eval Bids / Issue Recmd | 5d | 2005-07-28 A | 2005-08-31 A | EK000I127D | 100% | 2005-07-18 | 2005-07-22 | 2006-07-29 | 0 | 0 | 00 | PK | I21 | 000 | PK | I2127 |  |  | I |  | E | P |  |  |
| PK000MB68H | Receive Quotes for MB692 | 15d | 2005-07-28 A | 2005-08-26 A | PK000MB68G | 100% | 2005-08-10 | 2005-08-30 | 2006-07-29 | 0 | 0 | 00 | PK | MB6 | 000 | PK | MB692 | 101B | CE | M |  | C | P | 15 |  |
| PK000MB42G | Issue MB420 RFQ | 3d | 2005-08-01 A | 2005-08-05 A | EK000MB42F | 100% | 2005-08-01 | 2005-08-03 | 2006-07-29 | 0 | 0 | 00 | PK | MB4 | 000 | PK | MB420 | 101B | CE | M |  | B | P | 3 |  |
| PK000I220E | Eval Bids / Issue Recmd - MOV's | 5d | 2005-08-02 A | 2005-09-27 A | EK000I220D | 100% | 2005-08-17 | 2005-08-23 | 2006-07-29 | 0 | 0 | 00 | PK | I22 | 000 | PK | I2220 |  |  | I |  | E | P |  |  |
| PK000I230E | Eval Bids / Issue Recmd - On/Off Valves | 10d | 2005-08-02 A | 2005-09-28 A | EK000I230D | 100% | 2005-08-16 | 2005-08-29 | 2006-07-29 | 0 | 0 | 00 | PK | I22 | 000 | PK | I2230 |  |  | I |  | E | P |  |  |
| PK000MU22G | Issue MU222 RFQ | 0d | 2005-08-02 A | 2005-08-02 A | EK000MU22F | 100% | 2005-08-29 | 2005-08-29 | 2006-07-29 | 0 | 0 | 00 | PK | MU2 | 000 | PK | MU222 | 2401U | NE | M |  | B | P |  |  |
| PK000MB34G | Issue MB340 RFQ | 3d | 2005-08-02 A | 2005-08-03 A | EK000MB34F | 100% | 2005-08-02 | 2005-08-04 | 2006-07-29 | 0 | 0 | 00 | PK | MB3 | 000 | PK | MB340 | 101B | CE | M | X | B | P | 3 | 04 |
| PK000MB34H | Receive Quotes for MB340 | 15d | 2005-08-03 A | 2005-08-24 A | PK000MB34G | 100% | 2005-08-05 | 2005-08-25 | 2006-07-29 | 0 | 0 | 00 | PK | MB3 | 000 | PK | MB340 | 101B | CE | M | X | C | P | 15 | 04 |
| PK000MU21G | Issue MU221 RFQ | 3d | 2005-08-03 A | 2005-08-05 A | EK000MU21F FF | 100% | 2005-09-20 | 2005-09-22 | 2006-07-29 | 0 | 0 | 00 | PK | MU2 | 01E | PK | MU221 | 2402L | NE | M |  | B | P |  |  |
| PK000MU22H | Receive Quotes MU222 | 15d | 2005-08-03 A | 2005-08-22 A | PK000MU22G | 100% | 2005-08-29 | 2005-09-16 | 2006-07-29 | 0 | 0 | 00 | PK | MU2 | 000 | PK | MU222 | 2401U | NE | M |  | C | P |  |  |
| PK000PIA4D | Product Line Piping - Eval Bids/Issue Recmd | 10d | 2005-08-04 A | 2005-08-17 A | PK000PIA4B, PK000PIA4C | 100% |  |  | 2006-07-29 | 0 | 0 | 00 | PK | P00 | 000 | PK | PIA41 |  |  | P | X | E | P |  |  |
| PK000MB42H | Receive Quotes for MB420 | 15d | 2005-08-05 A | 2005-10-21 A | PK000MB42G | 100% | 2005-08-04 | 2005-08-24 | 2006-07-29 | 0 | 0 | 00 | PK | MB4 | 000 | PK | MB420 | 101B | CE | M |  | C | P | 15 |  |
| PK000MJ34X | Eval Bids & Issue Recmd MJ304 | 14d | 2005-08-06 A | 2005-10-10 A | EK000MJ34F | 100% | 2005-09-13 | 2005-09-30 | 2006-07-29 | 0 | 0 | 00 | PK | MJ3 | 000 | PK | MJ304 | 2003J | FE | M |  | E | P |  |  |
| PK000MU21H | Receive Quotes MU221 | 15d | 2005-08-08 A | 2005-08-25 A | PK000MU21G | 100% | 2005-09-23 | 2005-10-13 | 2006-07-29 | 0 | 0 | 00 | PK | MU2 | 01E | PK | MU221 | 2402L | NE | M |  | C | P |  |  |

Notes:
- PK000MD21G: P3 Activity Log Info: 101-E, 102-E (Absorber, / Stripper)

| ID | Activity | Duration | Start | Finish | Predecessors | Complete | Planned start | Planned finish | zData Date | PCA Criticality Index | PCA Duration Sensitivity | user_integer2 | EB02 - UNIT | EB01 - RESP | EB06 - WORK OP | EB03 - AREA | EB05 - DISCIPLINE | EB07 - REQN | EB08 - TAG | EB10 - KEY | EB04 - CLASS | EB11 - FLAG | EB09 - IPMS | EB00 - EPC | EB14 - RISK |
| --- | --- | --- | --- | --- | --- | --- | --- | --- | --- | --- | --- | --- | --- | --- | --- | --- | --- | --- | --- | --- | --- | --- | --- | --- | --- |
| PK000MB64G | Issue MB640 RFQ | 3d | 2005-08-08 A | 2005-08-11 A | EK000MB64F | 100% | 2005-08-08 | 2005-08-10 | 2006-07-29 | 0 | 0 | 3 | 00 | PK | MB6 | 000 | PK | MB640 | 101B | CE | M | X | B | P |  |
| PK000I221E | 000 Everest Control Valves - Eval Bids / Issue Recmd | 5d | 2005-08-10 A | 2005-08-31 A | EK000I221D | 100% | 2005-10-31 | 2005-11-04 | 2006-07-29 | 0 | 0 |  | 00 | PK | I22 | 000 | PK | I2211 |  |  | I |  | E | P |  |
| PK000I618E | Eval Bids / Issue Recmd - Temperature Gauges | 5d | 2005-08-11 A | 2005-08-31 A | EK000I618D | 100% | 2005-08-15 | 2005-08-19 | 2006-07-29 | 0 | 0 |  | 00 | PK | I16 | 000 | PK | I1618 |  |  | I |  | E | P |  |
| PK000MB64H | Receive Quotes for MB640 | 15d | 2005-08-11 A | 2005-09-09 A | PK000MB64G | 100% | 2005-08-11 | 2005-08-31 | 2006-07-29 | 0 | 0 | 15 | 00 | PK | MB6 | 000 | PK | MB640 | 101B | CE | M | X | C | P |  |
| PK000MC31I | Eval Bids & Issue Recmd MC310 | 20d | 2005-08-12 A | 2006-01-20 A | EK000MC31D, PK000MC31H | 100% | 2005-08-12 | 2005-09-08 | 2006-07-29 | 0 | 0 |  | 00 | PK | MC3 | 000 | PK | MC310 |  | PE | M | X | E | P |  |
| PK000MC32I | Eval Bids & Issue Recmd MC311 | 20d | 2005-08-12 A | 2005-11-14 A | EK000MC32D, PK000MC32H | 100% | 2005-08-12 | 2005-09-08 | 2006-07-29 | 0 | 0 |  | 00 | PK | MC3 | 000 | PK | MC311 |  | PE | M | X | E | P |  |
| PK020MC31E | MC312 - (120,121-C) - Eval Bids & Issue Recmd | 20d | 2005-08-12 A | 2005-09-19 A | EK020MC31D, PK020MC3C | 100% | 2005-08-12 | 2005-09-08 | 2006-07-29 | 0 | 0 |  | 00 | PK | MC3 | 000 | PK | MC312 |  | PE | M | X | E | P |  |
| PK000MD21I | Eval Bids & Issue Recmd MD201 | 17d | 2005-08-15 A | 2005-09-16 A | EK000MD21D, PK000MD21H | 100% | 2005-09-12 | 2005-10-04 | 2006-07-29 | 0 | 0 |  | 00 | PK | MD2 | 000 | PK | MD201 |  | FE | M |  | E | P |  |
| PK000I623E | Eval Bids / Issue Recmd - Multi-Point Thermocouples | 5d | 2005-08-15 A | 2005-08-31 A | EK000I623D | 100% | 2005-08-15 | 2005-08-19 | 2006-07-29 | 0 | 0 |  | 00 | PK | I16 | 000 | PK | I1623 |  |  | I |  | E | P |  |
| PK000I444B | Issue RFQ - Analyzer Shelter | 5d | 2005-08-19 A | 2005-08-25 A | EK000I444A | 100% | 2005-09-26 | 2005-09-30 | 2006-07-29 | 0 | 0 |  | 00 | PK | I44 | 000 | PK | I4440 |  |  | I |  | B | P |  |
| PK000MB21H | Receive Quotes for MB212 | 15d | 2005-08-22 A | 2005-09-27 A | PK000MB21G | 100% | 2005-08-03 | 2005-08-23 | 2006-07-29 | 0 | 0 | 15 | 00 | PK | MB2 | 000 | PK | MB212 | 101B | CE | M |  | C | P |  |
| PK000MB33J | MB333 - Final Negotiate/Interim Award 101-B | 5d | 2005-08-22 A | 2005-08-26 A | EK000MB33D, PK000MB33I, EK000EB015 | 100% | 2005-09-30 | 2005-10-06 | 2006-07-29 | 0 | 0 | 10 | 00 | PK | MB3 | 000 | PK | MB333 | 101B | CE | M |  | G | P | 04 |
| PK000I354B | ITCC - Inquiry REQ/RFQ | 5d | 2005-08-24 A | 2005-09-01 A | EK000I354A | 100% | 2005-08-29 | 2005-09-02 | 2006-07-29 | 0 | 0 |  | 00 | PK | I35 | 000 | IC | I3542 |  |  | I |  | B | P |  |
| PK000MB34I | Eval Bids & Issue Recmd MB340 | 15d | 2005-08-24 A | 2005-09-13 A | EK000MB34D, PK000MB34H | 100% | 2005-09-13 | 2005-10-03 | 2006-07-29 | 0 | 0 | 5 | 00 | PK | MB3 | 000 | PK | MB340 | 101B | CE | M |  | E | P | 04 |
| PK000MU41J | Final Negotiate/Interim Award - MU410 | 10d | 2005-08-24 A | 2005-08-24 A | PK000MU41I, EK000EB015 | 100% | 2005-08-29 | 2005-09-09 | 2006-07-29 | 0 | 0 | 10 | 00 | PK | MU4 | 000 | PK | MU410 | 2002U | PE | M | X | G | P | 05 |
| PK000MU41P | Issue Formal P.O. for MU410 | 3d | 2005-08-24 A | 2005-10-06 A | EK000MU41E, PK000MU41J | 100% | 2005-10-10 | 2005-10-12 | 2006-07-29 | 0 | 0 | 3 | 00 | PK | MU4 | 000 | PK | MU410 | 2002U | PE | M |  | K | P | 05 |
| PK000I444C | Receive Quotes - Analyzer Shelter | 25d | 2005-08-25 A | 2005-10-14 A | PK000I444B | 100% | 2005-10-03 | 2005-11-04 | 2006-07-29 | 0 | 0 |  | 00 | PK | I44 | 000 | PK | I4440 |  |  | I |  | C | P |  |
| PK000MU61J | Final Negotiate/Interim Award - MU611 | 10d | 2005-08-26 A | 2005-08-29 A | PK000MU61I, EK000EB015 | 100% | 2005-08-29 | 2005-09-09 | 2006-07-29 | 0 | 0 |  | 00 | PK | MU6 | 000 | PK | MU611 | 2101U | PE | M | X | G | P |  |
| PK000I112E | Eval Bids / Issue Recmd - Venturis | 3d | 2005-08-29 A | 2005-08-31 A | EK000I112D | 100% | 2005-09-26 | 2005-09-28 | 2006-07-29 | 0 | 0 |  | 00 | PK | I21 | 000 | PK | I2112 |  |  | I |  | E | P |  |
| PK000MB33K | MB333 - Fab/PO Promise 101-B Riser Transition 101-B | 130d | 2005-08-29 A | 2006-06-13 A | PK000MB33J, PK000MB33P FF | 100% | 2005-10-17 | 2006-04-18 | 2006-07-29 | 0 | 0 | 130 | 00 | PK | MB3 | 000 | PK | MB333 | 101B | CE | MB |  | H | P | 04 |
| PK000MU61P | Issue Formal P.O. for MU611 | 3d | 2005-08-29 A | 2005-10-04 A | EK000MU61E, PK000MU61J | 100% | 2005-09-12 | 2005-09-14 | 2006-07-29 | 0 | 0 |  | 00 | PK | MU6 | 000 | PK | MU611 | 2101U | PE | M |  | K | P |  |
| PK000MBP3J | Final Negotiate/Interim Award - Pressure Parts | 10d | 2005-08-29 A | 2005-09-30 A | EK000MBP3D, EK000MBP3E, PK000MBP3I, EK000EB015 | 100% | 2005-08-29 | 2005-09-09 | 2006-07-29 | 0 | 0 | 10 | 00 | PK | MB3 | 000 | PK | MB311 | 101B | CE | M | X | G | P | 04 |
| PK000MD33J | Final Negotiate/Interim Award - MD303 | 5d | 2005-08-29 A | 2005-09-09 A | EK000MD33D, PK000MD33I, PK000MD33M, EK000EB015 | 100% | 2005-08-29 | 2005-09-02 | 2006-07-29 | 0 | 0 |  | 00 | PK | MD3 | 000 | PK | MD303 | 105D | FE | M | X | G | P |  |
| PK000MU35J | Final Negotiate/Interim Award - MU350 | 10d | 2005-08-29 A | 2005-09-09 A | PK000MU35M, EK000EB015, EK000MU35B | 100% |  |  | 2006-07-29 | 0 | 0 |  | 00 | PK | MU3 | 000 | PK | MU350 | 101U | FE | M | X | G | P |  |
| PK000I110G | Final Negotiation / Interim Award - Orific Plates | 5d | 2005-08-31 A | 2005-09-01 A | PK000I110E, EK000EB015 | 100% | 2005-09-29 | 2005-10-05 | 2006-07-29 | 0 | 0 |  | 00 | PK | I21 | 000 | PK | I2110 |  |  | I |  | G | P |  |
| PK000I112G | Final Negotiation / Interim Award - Venturis | 5d | 2005-08-31 A | 2005-09-01 A | PK000I112E, EK000EB015 | 100% | 2005-09-29 | 2005-10-05 | 2006-07-29 | 0 | 0 |  | 00 | PK | I21 | 000 | PK | I2112 |  |  | I |  | G | P |  |
| PK000I115G | Final Negotiation / Interim Award - Annubars | 5d | 2005-08-31 A | 2005-09-01 A | PK000I115E, EK000EB015 | 100% | 2005-09-29 | 2005-10-05 | 2006-07-29 | 0 | 0 |  | 00 | PK | I21 | 000 | PK | I2115 |  |  | I |  | G | P |  |
| PK000I116G | Final Negotiation / Interim Award - Wedge Flow Meters | 5d | 2005-08-31 A | 2005-09-06 A | PK000I116E, EK000EB015 | 100% | 2005-10-06 | 2005-10-12 | 2006-07-29 | 0 | 0 |  | 00 | PK | I21 | 000 | PK | I2116 |  |  | I |  | G | P |  |
| PK000I121G | Final Negotiation / Interim Award - Vortex Meters | 5d | 2005-08-31 A | 2005-09-01 A | PK000I121E, EK000EB015 | 100% | 2005-09-29 | 2005-10-05 | 2006-07-29 | 0 | 0 |  | 00 | PK | I21 | 000 | PK | I2121 |  |  | I |  | G | P |  |
| PK000I122G | Final Negotiation / Interim Award - Coriolis Meters | 5d | 2005-08-31 A | 2005-09-01 A | PK000I122E, EK000EB015 | 100% | 2005-09-29 | 2005-10-05 | 2006-07-29 | 0 | 0 |  | 00 | PK | I21 | 000 | PK | I2122 |  |  | I |  | G | P |  |
| PK000I124G | Final Negotiation / Interim Award - Rotameters | 5d | 2005-08-31 A | 2005-09-01 A | PK000I124E, EK000EB015 | 100% | 2005-09-29 | 2005-10-05 | 2006-07-29 | 0 | 0 |  | 00 | PK | I21 | 000 | PK | I2124 |  |  | I |  | G | P |  |
| PK000I127G | Final Negotiation / Interim Award - Magnetic Flow Meters | 5d | 2005-08-31 A | 2005-09-01 A | PK000I127E, EK000EB015 | 100% | 2005-09-29 | 2005-10-05 | 2006-07-29 | 0 | 0 |  | 00 | PK | I21 | 000 | PK | I2127 |  |  | I |  | G | P |  |
| PK000I221G | Final Negotiation / Interim Award - Everest Control Valves | 10d | 2005-08-31 A | 2005-09-14 A | PK000I221E, EK000EB015 | 100% | 2005-11-07 | 2005-11-18 | 2006-07-29 | 0 | 0 |  | 00 | PK | I22 | 000 | PK | I2211 |  |  | I |  | G | P |  |
| PK000I611G | Final Negotiation / Interim Award - Pressure Gauges | 5d | 2005-08-31 A | 2005-09-06 A | PK000I611E, EK000EB015 | 100% | 2005-09-26 | 2005-09-30 | 2006-07-29 | 0 | 0 |  | 00 | PK | I16 | 000 | PK | I1611 |  |  | I |  | G | P |  |
| PK000I612G | Final Negotiation / Interim Award - Differential Pressure Gauges | 5d | 2005-08-31 A | 2005-09-01 A | PK000I612E, EK000EB015 | 100% | 2005-10-06 | 2005-10-12 | 2006-07-29 | 0 | 0 |  | 00 | PK | I16 | 000 | PK | I1612 |  |  | I |  | G | P |  |
| PK000I616G | Final Negotiation / Interim Award - Steam Drum Lvl Gauges | 5d | 2005-08-31 A | 2005-09-01 A | PK000I616E, EK000EB015 | 100% | 2005-09-29 | 2005-10-05 | 2006-07-29 | 0 | 0 |  | 00 | PK | I16 | 000 | PK | I1616 |  |  | I |  | G | P |  |
| PK000I617G | Final Negotiation / Interim Award - Magnetic Lvl Gauges | 5d | 2005-08-31 A | 2005-09-06 A | PK000I617E, EK000EB015 | 100% | 2005-10-06 | 2005-10-12 | 2006-07-29 | 0 | 0 |  | 00 | PK | I16 | 000 | PK | I1617 |  |  | I |  | G | P |  |
| PK000I621G | Final Negotiation / Interim Award - Temperature Elements | 5d | 2005-08-31 A | 2005-09-06 A | PK000I621E, EK000EB015 | 100% | 2005-10-11 | 2005-10-17 | 2006-07-29 | 0 | 0 |  | 00 | PK | I16 | 000 | PK | I1621 |  |  | I |  | G | P |  |
| PK000I623G | Final Negotiation / Interim Award - Multi-Point Thermocouples | 5d | 2005-08-31 A | 2005-09-06 A | PK000I623E, EK000EB015 | 100% | 2005-10-11 | 2005-10-17 | 2006-07-29 | 0 | 0 |  | 00 | PK | I16 | 000 | PK | I1623 |  |  | I |  | G | P |  |
| PK000I110K | Issue Formal Purchase Agreement. - Orific Plates | 5d | 2005-09-01 A | 2005-12-15 A | PK000I110G | 100% | 2005-10-10 | 2005-10-17 | 2006-07-29 | 0 | 0 |  | 00 | PK | I21 | 000 | PK | I2110 |  |  | I |  | K | P |  |
| PK000I112K | Issue Formal Purchase Agreement - Venturis | 5d | 2005-09-01 A | 2005-12-15 A | PK000I112G | 100% | 2005-10-10 | 2005-10-17 | 2006-07-29 | 0 | 0 |  | 00 | PK | I21 | 000 | PK | I2112 |  |  | I |  | K | P |  |
| PK000I115K | Issue Formal Purchase Agreement - Annubars | 5d | 2005-09-01 A | 2005-11-30 A | PK000I115G | 100% | 2005-10-10 | 2005-10-17 | 2006-07-29 | 0 | 0 |  | 00 | PK | I21 | 000 | PK | I2115 |  |  | I |  | K | P |  |
| PK000I121K | Issue Formal Purchase Agreement - Vortex Meters | 5d | 2005-09-01 A | 2005-11-30 A | PK000I121G | 100% | 2005-10-10 | 2005-10-17 | 2006-07-29 | 0 | 0 |  | 00 | PK | I21 | 000 | PK | I2121 |  |  | I |  | K | P |  |
| PK000I122K | Issue Formal Purchase Agreement - Coriolis Meters | 5d | 2005-09-01 A | 2005-11-30 A | PK000I122G | 100% | 2005-10-10 | 2005-10-17 | 2006-07-29 | 0 | 0 |  | 00 | PK | I21 | 000 | PK | I2122 |  |  | I |  | K | P |  |
| PK000I124K | Issue Formal Purchase Agreement - Rotameters | 5d | 2005-09-01 A | 2005-11-30 A | PK000I124G | 100% | 2005-10-10 | 2005-10-17 | 2006-07-29 | 0 | 0 |  | 00 | PK | I21 | 000 | PK | I2124 |  |  | I |  | K | P |  |
| PK000I127K | Magnetic Flow Meters - Issue Formal Purchase Agreement | 5d | 2005-09-01 A | 2005-11-30 A | PK000I127G | 100% | 2005-10-10 | 2005-10-17 | 2006-07-29 | 0 | 0 |  | 00 | PK | I21 | 000 | PK | I2127 |  |  | I |  | K | P |  |
| PK000I131G | Final Negotiation / Interim Award - Transmitters | 5d | 2005-09-01 A | 2005-09-06 A | PK000I131E | 100% | 2005-09-26 | 2005-09-30 | 2006-07-29 | 0 | 0 |  | 00 | PK | I13 | 000 | PK | I1310 |  |  | I |  | G | P |  |
| PK000I354C | ITCC - Receive Bids | 15d | 2005-09-01 A | 2005-09-28 A | PK000I354B | 100% | 2005-09-29 | 2005-10-19 | 2006-07-29 | 0 | 0 |  | 00 | PK | I35 | 000 | IC | I3542 |  |  | I |  | C | P |  |
| PK000I612K | Issue Formal Purchase Agreement - Differential Pressure Gauges | 5d | 2005-09-01 A | 2006-03-08 A | PK000I612G, EK000YA000 FF+5d | 100% | 2005-10-10 | 2005-10-17 | 2006-07-29 | 0 | 0 |  | 00 | PK | I16 | 000 | PK | I1612 |  |  | I |  | K | P |  |
| PK000I616K | Issue Formal Purchase Agreement. - Steam Drum Lvl Gauges | 5d | 2005-09-01 A | 2006-01-30 A | PK000I616G | 100% | 2005-10-10 | 2005-10-17 | 2006-07-29 | 0 | 0 |  | 00 | PK | I16 | 000 | PK | I1616 |  |  | I |  | K | P |  |
| PK000MBP4J | Final Negotiate/Interim Award - Cast Material | 10d | 2005-09-01 A | 2005-09-09 A | EK000MBP4D, EK000MBP4E, PK000MBP4I, EK000EB015 | 100% | 2005-08-29 | 2005-09-09 | 2006-07-29 | 0 | 0 | 10 | 00 | PK | MB3 | 000 | PK | MB312 | 101B | CE | M | X | G | P | 04 |
| PK000I352B | SIS - Inquiry REQ/RFQ | 5d | 2005-09-02 A | 2005-09-07 A | EK000I352A | 100% | 2005-09-29 | 2005-10-05 | 2006-07-29 | 0 | 0 |  | 00 | PK | I35 | 000 | IC | I3520 |  |  | I |  | B | P |  |
| PK000MB61J | Final Negotiate/Interim Award - MB610 | 10d | 2005-09-05 A | 2005-09-09 A | EK000MB61D, EK000MB61E, PK000MB61I, EK000EB015 | 100% | 2005-09-26 | 2005-10-07 | 2006-07-29 | 0 | 0 | 10 | 00 | PK | MB6 | 000 | PK | MB610 | 101BA | CE | M | X | G | P |  |
| PK000MB62J | Final Negotiate/Interim Award - MB621 | 10d | 2005-09-05 A | 2005-09-09 A | EK000MB62D, PK000MB62I, EK000EB015, EK000MB62F FS+2d | 100% | 2005-09-26 | 2005-10-07 | 2006-07-29 | 0 | 0 | 10 | 00 | PK | MB6 | 000 | PK | MB621 | 101BJ1 | CE | M | X | G | P |  |
| PK000MB63J | Final Negotiate/Interim Award - MB630 | 5d | 2005-09-05 A | 2005-09-09 A | EK000MB63D, PK000MB63I, EK000EB015, EK000MB63F FS+3d | 100% | 2005-09-26 | 2005-09-30 | 2006-07-29 | 0 | 0 | 10 | 00 | PK | MB6 | 000 | PK | MB630 | 101BL1 | CE | M | X | G | P | 04 |
| PK000MB81J | Final Negotiate/Interim Award - MB810 | 10d | 2005-09-05 A | 2005-09-09 A | EK000MB81D, PK000MB81I, EK000EB015, EK000MB81F FS+5d | 100% | 2005-09-26 | 2005-10-07 | 2006-07-29 | 0 | 0 |  | 00 | PK | MB8 | 000 | PK | MB810 |  | CE | M | X | G | P |  |
| PK000I116K | Issue Formal Purchase Agreement - Wedge Flow Meters | 5d | 2005-09-06 A | 2006-03-10 A | PK000I116G, EK000YA000 FF+5d | 100% | 2005-10-10 | 2005-10-17 | 2006-07-29 | 0 | 0 |  | 00 | PK | I21 | 000 | PK | I2116 |  |  | I |  | K | P |  |
| PK000I131K | Issue Formal Purchase Agreement - Transmitters | 5d | 2005-09-06 A | 2006-01-02 A | PK000I131G | 100% | 2005-10-10 | 2005-10-17 | 2006-07-29 | 0 | 0 |  | 00 | PK | I13 | 000 | PK | I1310 |  |  | I |  | K | P |  |
| PK000I611K | Issue Formal Purchase Agreement - Pressure Gauges | 5d | 2005-09-06 A | 2006-03-08 A | PK000I611G, EK000YA000 FF+5d | 100% | 2005-10-10 | 2005-10-17 | 2006-07-29 | 0 | 0 |  | 00 | PK | I16 | 000 | PK | I1611 |  |  | I |  | K | P |  |
| PK000I617K | Issue Formal Purchase Agreement - Magnetic Lvl Gauges | 5d | 2005-09-06 A | 2006-02-20 A | PK000I617G, EK000YA000 FF | 100% | 2005-10-10 | 2005-10-17 | 2006-07-29 | 0 | 0 |  | 00 | PK | I16 | 000 | PK | I1617 |  |  | I |  | K | P |  |
| PK000I621K | Issue Formal Purchase Agreement - Temperature Elements | 5d | 2005-09-06 A | 2006-01-30 A | PK000I621G | 100% | 2005-10-10 | 2005-10-17 | 2006-07-29 | 0 | 0 |  | 00 | PK | I16 | 000 | PK | I1621 |  |  | I |  | K | P |  |
| PK000I623K | Issue Formal Purchase Agreement - Multi-Point Thermocouples | 5d | 2005-09-06 A | 2006-01-30 A | PK000I623G | 100% | 2005-09-26 | 2005-09-30 | 2006-07-29 | 0 | 0 |  | 00 | PK | I16 | 000 | PK | I1623 |  |  | I |  | K | P |  |
| PK000MB69I | Eval Bids & Issue Recmd MB691 | 16d | 2005-09-06 A | 2005-11-29 A | EK000MB69D, PK000MB69H | 100% | 2005-09-26 | 2005-10-17 | 2006-07-29 | 0 | 0 | 5 | 00 | PK | MB6 | 000 | PK | MB691 | 101B | CE | M |  | E | P |  |
| PK000MJ73I | Eval Bids & Issue Recmd MJ730 | 15d | 2005-09-06 A | 2005-11-18 A | EK000MJ73D | 100% | 2005-10-24 | 2005-11-11 | 2006-07-29 | 0 | 0 |  | 00 | PK | MJ7 | 000 | PK | MJ730 | 2303J | PE | M | X | E | P |  |
| PK000I352C | SIS - Receive Bids | 15d | 2005-09-07 A | 2005-09-21 A | PK000I352B | 100% | 2005-10-06 | 2005-10-26 | 2006-07-29 | 0 | 0 |  | 00 | PK | I35 | 000 | IC | I3520 |  |  | I |  | C | P |  |
| PK000PTA0D | Engineered Pipe Supports - Interim Award | 10d | 2005-09-08 A | 2005-09-14 A | PK000PTA0C, EK000EB015 | 100% | 2006-06-14 | 2006-06-27 | 2006-07-29 | 0 | 0 |  | 00 | PK | P60 | 000 | PK | PTA02 |  |  | P |  | G | P |  |
| PK000I210G | Final Negotiation / Interim Award - Control Valves | 5d | 2005-09-09 A | 2005-09-09 A | PK000I210E, EK000EB015 | 100% | 2005-09-26 | 2005-09-30 | 2006-07-29 | 0 | 0 |  | 00 | PK | I22 | 000 | PK | I2210 |  |  | I |  | G | P |  |
| PK000I210K | 000 Control Valves - Issue Formal Purchase Agreement | 5d | 2005-09-09 A | 2006-03-06 A | PK000I210G, EK000YA000 FF+5d | 100% | 2005-10-10 | 2005-10-17 | 2006-07-29 | 0 | 0 |  | 00 | PK | I22 | 000 | PK | I2210 |  |  | I |  | K | P |  |
| PK000IC35G | DCS - Interim Award | 5d | 2005-09-09 A | 2005-11-11 A | PK000IC35E, EK000EB015, EK000IC36D | 100% | 2005-09-26 | 2005-09-30 | 2006-07-29 | 0 | 0 |  | 00 | PK | I35 | 000 | PK | I3510 |  |  | I | X | G | P |  |
| PK000MB41J | Final Negotiate/Interim Award - MB410 | 10d | 2005-09-09 A | 2005-09-09 A | EK000MB41D, EK000MB41E, PK000MB41I, EK000EB015 | 100% | 2005-09-26 | 2005-10-07 | 2006-07-29 | 0 | 0 | 10 | 00 | PK | MB4 | 000 | PK | MB410 | 101B | CE | M | X | G | P | 04 |

| ID | Activity | Duration | Start | Finish | Predecessors | Complete | Remaining | Planned start | Planned finish | Total float | Free float | Expected finish | zData Date | PCA Criticality Index | PCA Duration Sensitivity | user_integer2 | EB02 - UNIT | EB01 - RESP | EB06 - WORK OP | EB03 - AREA | EB05 - DISCIPLINE | EB07 - REQN | EB08 - TAG | EB10 - KEY | EB04 - CLASS | EB09 - IPMS | EB00 - EPC | EB14 - RISK | EB11 - FLAG | Optimistic Duration | Most Likely Duration | Pessimistic Duration | EB21 - Rev 2 Risk Associations |
| --- | --- | --- | --- | --- | --- | --- | --- | --- | --- | --- | --- | --- | --- | --- | --- | --- | --- | --- | --- | --- | --- | --- | --- | --- | --- | --- | --- | --- | --- | --- | --- | --- | --- |
| PK000MB41P | Issue Formal P.O. for MB410 | 3d | 2005-09-09 A | 2005-10-10 A | PK000MB41J | 100% |  | 2005-10-10 | 2005-10-12 |  |  |  | 2006-07-29 | 0 | 0 | 3 | 00 | PK | MB4 | 000 | PK | MB410 | 101B | CE | M | K | P | 04 |  |  |  |  |  |
| PK000MB61P | Issue Formal P.O. for MB610 | 3d | 2005-09-09 A | 2005-10-31 A | PK000MB61J | 100% |  | 2005-10-10 | 2005-10-12 |  |  |  | 2006-07-29 | 0 | 0 | 3 | 00 | PK | MB6 | 000 | PK | MB610 | 101BA | CE | M | K | P |  | X |  |  |  |  |
| PK000MB62P | Issue Formal P.O. for MB621 | 3d | 2005-09-09 A | 2006-01-09 A | PK000MB62J | 100% |  | 2005-10-10 | 2005-10-12 |  |  |  | 2006-07-29 | 0 | 0 | 3 | 00 | PK | MB6 | 000 | PK | MB621 | 101BJ1 | CE | M | K | P |  |  |  |  |  |  |
| PK000MB63P | Issue Formal P.O. for MB630 | 3d | 2005-09-09 A | 2005-10-10 A | PK000MB63J | 100% |  | 2005-10-03 | 2005-10-05 |  |  |  | 2006-07-29 | 0 | 0 | 3 | 00 | PK | MB6 | 000 | PK | MB630 | 101BL1 | CE | M | K | P | 04 | X |  |  |  |  |
| PK000MB81P | Issue Formal P.O. for MB810 | 10d | 2005-09-09 A | 2005-10-21 A | PK000MB81J | 100% |  | 2005-10-10 | 2005-10-21 |  |  |  | 2006-07-29 | 0 | 0 |  | 00 | PK | MB8 | 000 | PK | MB810 |  | CE | M | K | P |  | X |  |  |  |  |
| PK000MBP1K | MB221 - Fab/PO Promise 101-B Radiant Steel Panels | 140d | 2005-09-09 A | 2006-08-01 A | EK000MB085, PK000MBP1P FF, PK000MBP1J | 100% |  | 2005-09-23 | 2006-04-11 |  |  |  | 2006-07-29 | 0 | 0 | 140 | 00 | PK | MB2 | 000 | PK | MB221 | 101B | CE | MB | H | P | 04 | X |  |  |  |  |
| PK000MBP1P | Issue Formal P.O. for 101-B Shop Fab | 3d | 2005-09-09 A | 2005-10-21 A | PK000MBP1J | 100% |  | 2005-09-23 | 2005-09-28 |  |  |  | 2006-07-29 | 0 | 0 | 3 | 00 | PK | MB2 | 000 | PK | MB221 | 101B | CE | M | K | P | 04 | X |  |  |  |  |
| PK000MBP1Q | MB221 - Fab/PO Promise 101-B Radiant Coil/Harps | 130d | 2005-09-09 A | 2006-10-27 A | PK000MBP3T, PK000MBP3Z, PK000MBP4T FF, PK000MBP4U FF, PK000MBP4Z | 100% |  | 2006-08-17 | 2007-02-14 |  |  |  | 2006-07-29 | 0 | 0 | 130 | 00 | PK | MB2 | 000 | PK | MB221 | 101B | CE | MB | H | P | 04 |  |  |  |  |  |
| PK000MBP1R | MB221 - Fab/PO Promise 101-B Convection Modules | 130d | 2005-09-09 A | 2006-10-27 A | EK000MB090, PK000MB34Z FF+60d, PK000MB41Z FF, PK000MBP3U FF, PK000MBP3X, PK000MB41K FF | 100% |  | 2006-11-06 | 2007-05-04 |  |  |  | 2006-07-29 | 0 | 0 | 130 | 00 | PK | MB2 | 000 | PK | MB221 | 101B | CE | MB | H | P | 04 |  |  |  |  |  |
| PK000MBP1S | MB221 - Fabr/PO Promise 101-B Radiant Ducting | 130d | 2005-09-09 A | 2006-10-16 A | EK000MB095 FF | 100% |  | 2006-04-17 | 2006-10-13 |  |  |  | 2006-07-29 | 0 | 0 | 130 | 00 | PK | MB2 | 000 | PK | MB221 | 101B | CE | MB | H | P | 04 |  |  |  |  |  |
| PK000MBP4P | Issue Formal P.O. for 101-B Cast Material | 3d | 2005-09-09 A | 2005-10-21 A | PK000MBP4J | 100% |  | 2005-09-27 | 2005-09-29 |  |  |  | 2006-07-29 | 0 | 0 | 3 | 00 | PK | MB3 | 000 | PK | MB312 | 101B | CE | M | K | P | 04 | X |  |  |  |  |
| PK000MD21J | Final Negotiate/Interim Award - MD201 | 3d | 2005-09-09 A | 2005-10-03 A | EK000MD21D, PK000MD21I, EK000EB015 | 100% |  | 2005-09-29 | 2005-10-03 |  |  |  | 2006-07-29 | 0 | 0 |  | 00 | PK | MD2 | 000 | PK | MD201 |  | FE | M | G | P |  |  |  |  |  |  |
| PK000MD22J | Final Negotiate/Interim Award - MD202 | 10d | 2005-09-09 A | 2005-09-16 A | EM000MD22D, PK000MD22I, EK000MD22F, EK000EB015 | 100% |  | 2005-08-29 | 2005-09-09 |  |  |  | 2006-07-29 | 0 | 0 |  | 00 | PK | MD2 | 000 | PK | MD202 |  | FE | M | G | P |  | X |  |  |  |  |
| PK000MD31J | Final Negotiate/Interim Award - MD301 | 10d | 2005-09-09 A | 2005-09-09 A | EK000MD31D, PK000MD31I, PK000MD31M, EK000EB015 | 100% |  | 2005-08-29 | 2005-09-09 |  |  |  | 2006-07-29 | 0 | 0 |  | 00 | PK | MD3 | 000 | PK | MD301 | 103D | CE | M | G | P |  | X |  |  |  |  |
| PK000MD31K | MD301 - Fabricate/PO Promise 103-D | 340d | 2005-09-09 A | 2007-03-19 | PK000MD31P FF, PK000MD31J | 89% | 36d | 2005-09-12 | 2007-01-02 | 55d | 0d | 2007-03-19 | 2006-07-29 | 0 | 0 | 280 | 00 | PK | MD3 | 000 | PK | MD301 | 103D | CE | MD | H | P | 13 | HD |  |  |  |  |
| PK000MD32J | Final Negotiate/Interim Award - MD302 | 10d | 2005-09-09 A | 2005-09-16 A | EK000MD32D, PK000MD32I, PK000MD32M FS+12d, EK000EB015 | 100% |  | 2005-08-29 | 2005-09-09 |  |  |  | 2006-07-29 | 0 | 0 |  | 00 | PK | MD3 | 000 | PK | MD302 | 104D1 | CE | M | G | P |  | X |  |  |  |  |
| PK000MD33K | MD303 - Fabricate/PO Promise 105-D | 410d | 2005-09-09 A | 2007-04-19 | EK000MD055 FF, PK000MD33P FF, PK000MD33J | 86% | 59d | 2005-09-05 | 2007-04-03 | 50d | 0d | 2007-04-19 | 2006-07-29 | 0 | 0 | 310 | 00 | PK | MD3 | 000 | PK | MD303 | 105D | FE | MD | H | P | 13 | HD |  |  |  |  |
| PK000MD33P | Issue Formal P.O. for MD303 | 10d | 2005-09-09 A | 2005-09-19 A | EK000MD33E, PK000MD33J, EK000EB015 | 100% |  | 2005-09-05 | 2005-09-16 |  |  |  | 2006-07-29 | 0 | 0 |  | 00 | PK | MD3 | 000 | PK | MD303 | 105D | FE | M | K | P |  | X |  |  |  |  |
| PK000MD34J | Final Negotiate/Interim Award - MD304 | 10d | 2005-09-09 A | 2005-09-16 A | EK000MD34D, PK000MD34I, PK000MD34M, EK000EB015 | 100% |  | 2005-08-29 | 2005-09-09 |  |  |  | 2006-07-29 | 0 | 0 |  | 00 | PK | MD3 | 000 | PK | MD304 |  | CE | M | G | P |  | X |  |  |  |  |
| PK000MD41J | Final Negotiate/Interim Award - MD401 | 10d | 2005-09-09 A | 2005-09-23 A | EK000MD41D, PK000MD41I, EK000EB015 | 100% |  | 2005-08-29 | 2005-09-09 |  |  |  | 2006-07-29 | 0 | 0 |  | 00 | PK | MD4 | 000 | PK | MD401 | 101F | CE | M | G | P |  | X |  |  |  |  |
| PK000MD42J | Final Negotiate/Interim Award - MD402 | 10d | 2005-09-09 A | 2005-09-16 A | EM000MD42D, PK000MD42I, PK000MD42M, EK000EB015 | 100% |  | 2005-08-29 | 2005-09-09 |  |  |  | 2006-07-29 | 0 | 0 |  | 00 | PK | MD4 | 000 | PK | MD402 |  | CE | M | G | P |  | X |  |  |  |  |
| PK000MD43J | Final Negotiate/Interim Award - MD403 | 10d | 2005-09-09 A | 2005-09-23 A | EK000MD43D, PK000MD43I, PK000MD43M, EK000EB015, PK000MD33M | 100% |  | 2005-08-29 | 2005-09-09 |  |  |  | 2006-07-29 | 0 | 0 |  | 00 | PK | MD4 | 000 | PK | MD403 | 106F | CE | M | G | P |  | X |  |  |  |  |
| PK000MD44J | Final Negotiate/Interim Award - MD404 | 10d | 2005-09-09 A | 2005-09-16 A | EM000MD44D, PK000MD44I, EK000MD44F, EK000EB015 | 100% |  | 2005-08-29 | 2005-09-09 |  |  |  | 2006-07-29 | 0 | 0 |  | 00 | PK | MD4 | 000 | PK | MD404 |  | NE | M | G | P |  | Y |  |  |  |  |
| PK000MD45J | Final Negotiate/Interim Award - MD405 | 10d | 2005-09-09 A | 2005-09-16 A | EM000MD45D, PK000MD45I, EK000EB015, EK000MD45F | 100% |  | 2005-08-29 | 2005-09-09 |  |  |  | 2006-07-29 | 0 | 0 |  | 00 | PK | MD4 | 000 | PK | MD405 |  | CE | M | G | P |  |  |  |  |  |  |
| PK000MD46J | Final Negotiate/Interim Award - MD411 | 10d | 2005-09-09 A | 2005-09-16 A | EM000MD46D, PK000MD46I, EK000MD46F, EK000EB015 | 100% |  | 2005-08-29 | 2005-09-09 |  |  |  | 2006-07-29 | 0 | 0 |  | 00 | PK | MD4 | 000 | PK | MD411 |  | PE | M | G | P |  |  |  |  |  |  |
| PK000MD51J | Final Negotiate/Interim Award - MD501 | 10d | 2005-09-09 A | 2005-09-26 A | EK000MD51D, PK000MD51I, PK000MD51M, EK000EB015 | 100% |  | 2005-08-29 | 2005-09-09 |  |  |  | 2006-07-29 | 0 | 0 |  | 00 | PK | MD5 | 000 | PK | MD501 | 107D | CE | M | G | P |  | X |  |  |  |  |
| PK000MJ21J | Final Negotiate/Interim Award - MJ202 | 10d | 2005-09-09 A | 2005-09-09 A | EK000MJ21F, PK000MJ21H, PK000MJ21I, PK000MJ21M, EK000EB015 | 100% |  | 2005-08-29 | 2005-09-09 |  |  |  | 2006-07-29 | 0 | 0 | 4 | 00 | PK | MJ2 | 000 | PK | MJ202 |  | CE | M | G | P | 06 | X |  |  |  |  |
| PK000MJ21K | MJ202 - Fabricate/PO Promise 102/3/5-J | 320d | 2005-09-09 A | 2006-09-15 A | PK000MJ21J, PK000MJ21P FF | 100% |  | 2005-09-12 | 2006-12-05 |  |  |  | 2006-07-29 | 0 | 0 | 320 | 00 | PK | MJ2 | 000 | PK | MJ202 | 103J | CE | MJ | H | P | 06 | X |  |  |  |  |
| PK000MJ21P | Issue Formal P.O. for MJ202 | 10d | 2005-09-09 A | 2005-10-20 A | PK000MJ21J, EK000MJ21E FF+2d | 100% |  | 2005-10-17 | 2005-10-28 |  |  |  | 2006-07-29 | 0 | 0 | 3 | 00 | PK | MJ2 | 000 | PK | MJ202 |  | CE | M | K | P | 06 |  |  |  |  |  |
| PK000MJ22J | Final Negotiate/Interim Award - MJ201 | 10d | 2005-09-09 A | 2005-09-30 A | EK000MJ22F, PK000MJ22H, PK000MJ22M, EK000EB015 | 100% |  | 2005-08-29 | 2005-09-09 |  |  |  | 2006-07-29 | 0 | 0 | 13 | 00 | PK | MJ2 | 000 | PK | MJ201 | 101J | CE | M | G | P | 06 | X |  |  |  |  |
| PK000MJ31J | Final Negotiate/Interim Award - MJ301 | 11d | 2005-09-09 A | 2005-12-21 A | PK000MJ31H, PK000MJ31M, EK000EB015, EK000MJ31X | 100% |  | 2005-08-29 | 2005-09-12 |  |  |  | 2006-07-29 | 0 | 0 |  | 00 | PK | MJ3 | 000 | PK | MJ301 | 104J | FE | M | G | P |  | X |  |  |  |  |
| PK000MJ32J | Final Negotiate/Interim Award - MJ302 | 12d | 2005-09-09 A | 2005-12-21 A | PK000MJ32I, PK000MJ32M, EK000EB015, PK000MJ32X | 100% |  | 2005-08-29 | 2005-09-13 |  |  |  | 2006-07-29 | 0 | 0 |  | 00 | PK | MJ3 | 000 | PK | MJ302 | 107JA | FE | M | G | P |  | X |  |  |  |  |
| PK000MJ75J | Final Negotiate/Interim Award - MJ750 | 10d | 2005-09-09 A | 2005-09-12 A | PK000MJ75I, EK000EB015 | 100% |  | 2005-08-29 | 2005-09-09 |  |  |  | 2006-07-29 | 0 | 0 |  | 00 | PK | MJ7 | 000 | PK | MJ750 |  | PE | M | G | P |  |  |  |  |  |  |
| PK000ML31J | Final Negotiate/Interim Award - ML313 | 5d | 2005-09-09 A | 2005-09-30 A | PK000ML31M, EK000EB015 | 100% |  | 2005-08-29 | 2005-09-02 |  |  |  | 2006-07-29 | 0 | 0 |  | 00 | PK | ML3 | 000 | PK | ML313 | 160L | FE | M | G | P |  | X |  |  |  |  |
| PK000MU35K | MU350 - Fabricate/PO Promise 101-U DEAERATOR | 130d | 2005-09-09 A | 2006-05-24 A | PK000MU35J, PK000MU35P FF | 100% |  | 2005-08-29 | 2006-02-28 |  |  |  | 2006-07-29 | 0 | 0 | 130 | 00 | PK | MU3 | 000 | PK | MU350 | 101U | FE | MU | H | P | 13 |  |  |  |  |  |
| PK000MU35P | Issue Formal P.O. for MU350 | 3d | 2005-09-09 A | 2005-10-24 A | EK000MU35E, PK000MU35J | 100% |  | 2005-09-12 | 2005-09-14 |  |  |  | 2006-07-29 | 0 | 0 |  | 00 | PK | MU3 | 000 | PK | MU350 | 101U | FE | M | K | P |  |  |  |  |  |  |
| PK000PIA1G | Bulk Piping A/G & U/G - Fab/Exworks (CS, SS, U/G) | 100d | 2005-09-09 A | 2006-05-01 A | PK000PIA1F FF, PK000MM025, PK000PE030, EK000MC010 FF, EK000PE090 FF, PK000MM010 FF, PK000PK01C FF | 100% |  | 2005-11-08 | 2006-03-29 |  |  |  | 2006-07-29 | 0 | 0.3 | 30 | 00 | PK | P00 | 000 | PK | PIA11 |  |  | P | H | P | 01 |  | 15 | 18 | 30 | 02 |
| PK000PIA4E | Product Line Piping - Final Negotiation/Interim Award | 10d | 2005-09-09 A | 2005-10-14 A | PK000PIA4D, EK000EB015 | 100% |  | 2005-09-26 | 2005-10-07 |  |  |  | 2006-07-29 | 0 | 0 |  | 00 | PK | P00 | 000 | PK | PIA41 |  |  | P | G | P |  |  |  |  |  |  |
| PK000PR20B | PR201 KAAP Catalyst - Issue RFQ | 3d | 2005-09-09 A | 2005-09-12 A | EK000EB015 | 100% |  | 2005-06-27 | 2005-06-29 |  |  |  | 2006-07-29 | 0 | 0 | 3 | 00 | PK | MB2 | 000 | PK | PR201 |  | CE | M | B | P |  |  |  |  |  |  |
| PK000IC35K | DCS - Formal Award | 10d | 2005-09-12 A | 2005-11-17 A | PK000IC35G, EK000IC351, EK000IC352, EK000EB015 | 100% |  | 2005-11-25 | 2005-12-08 |  |  |  | 2006-07-29 | 0 | 0 |  | 00 | PK | I35 | 000 | PK | I3510 |  |  | I | K | P |  |  |  |  |  | 03 |
| PK000MB41K | MB410 - Fabricate/PO Promise 101-B Cast Tube Supports | 150d | 2005-09-12 A | 2006-03-30 A | PK000MB41J, PK000MB41P FF | 100% |  | 2005-10-17 | 2006-05-16 |  |  |  | 2006-07-29 | 0 | 0 | 150 | 00 | PK | MB4 | 000 | PK | MB410 | 101B | CE | MB | H | P | 04 |  |  |  |  |  |
| PK000MB61K | MB610 - Fabricate/PO Promise 101-B Burners | 130d | 2005-09-12 A | 2006-05-01 A | PK000MB61J, PK000MB61P FF | 100% |  | 2005-10-17 | 2006-04-18 |  |  |  | 2006-07-29 | 0 | 0 | 130 | 00 | PK | MB6 | 000 | PK | MB610 | 101BA | CE | MB | H | P |  | X |  |  |  |  |
| PK000MB62K | MB621 - Fabricate/PO Promise 101-B ID & FD Fans | 200d | 2005-09-12 A | 2006-12-15 A | PK000MB62J, PK000MB62P FF | 100% |  | 2005-10-17 | 2006-07-25 |  |  |  | 2006-07-29 | 0 | 0 | 200 | 00 | PK | MB6 | 000 | PK | MB621 | 101BJ1 | CE | MB | H | P |  |  |  |  |  |  |
| PK000MB63K | MB630 - Fabricate/PO Promise 101-B Air Preheater | 200d | 2005-09-12 A | 2006-05-15 A | PK000MB63J, PK000MB63P FF | 100% |  | 2005-10-17 | 2006-07-25 |  |  |  | 2006-07-29 | 0 | 0 | 180 | 00 | PK | MB6 | 000 | PK | MB630 | 101BL1 | CE | MB | H | P | 04 | X |  |  |  |  |
| PK000MB66I | Eval Bids & Issue Recmd MB660 | 15d | 2005-09-12 A | 2006-02-20 A | EK000MB66D, PK000MB66H | 100% |  | 2005-09-26 | 2005-10-14 |  |  |  | 2006-07-29 | 0 | 0 | 5 | 00 | PK | MB6 | 000 | PK | MB660 | 101B | CE | MB | E | P |  |  |  |  |  |  |
| PK000MB81K | MB810 - Fabricate/PO Promise 102-B | 130d | 2005-09-12 A | 2006-07-14 A | PK000MB81J, PK000MB81P FF | 100% |  | 2005-10-17 | 2006-04-18 |  |  |  | 2006-07-29 | 0 | 0 | 130 | 00 | PK | MB8 | 000 | PK | MB810 | 102B | CE | MB | H | P | 13 | X |  |  |  |  |
| PK000MJ75P | Issue Formal P.O. for MJ750 | 10d | 2005-09-12 A | 2005-09-23 A | EK000MJ75E, PK000MJ75J | 100% |  | 2005-10-17 | 2005-10-28 |  |  |  | 2006-07-29 | 0 | 0 |  | 00 | PK | MJ7 | 000 | PK | MJ750 |  | PE | M | K | P |  |  |  |  |  |  |
| PK000PR20C | PR201 KAAP Catalyst - Receive Quotes | 15d | 2005-09-12 A | 2005-10-18 A | PK000PR20B | 100% |  | 2005-08-03 | 2005-08-23 |  |  |  | 2006-07-29 | 0 | 0 | 15 | 00 | PK | MB2 | 000 | PK | PR201 |  | CE | M | C | P |  |  |  |  |  |  |
| PK000MD32K | MD302 - Fabricate/PO Promise 104-D1/2 | 260d | 2005-09-12 A | 2007-02-09 | PK000MD32J, PK000MD32P FF | 96% | 10d | 2005-09-12 | 2006-09-12 | 85d | 0d | 2007-02-09 | 2006-07-29 | 0 | 0 | 260 | 00 | PK | MD3 | 000 | PK | MD302 | 104D1 | CE | MD | H | P | 13 | HD |  |  |  |  |
| PK000MD41P | Issue Formal P.O. for MD401 | 10d | 2005-09-12 A | 2005-09-20 A | EK000MD41E, PK000MD41J | 100% |  | 2005-09-12 | 2005-09-23 |  |  |  | 2006-07-29 | 0 | 0 |  | 00 | PK | MD4 | 000 | PK | MD401 | 101F | CE | M | K | P |  |  |  |  |  |  |
| PK000MJ75K | MJ750 - Fabricate/PO Promise SURFACE CONDENSORS | 260d | 2005-09-12 A | 2006-06-02 A | PK000MJ75J, PK000MJ75P FF | 100% |  | 2005-09-12 | 2006-09-12 |  |  |  | 2006-07-29 | 0 | 0 | 260 | 00 | PK | MJ7 | 000 | PK | MJ750 |  | PE | MJ | H | P | 13 |  |  |  |  |  |
| PK000MB34J | Final Negotiate/Interim Award - MB340 | 3d | 2005-09-13 A | 2005-09-14 A | EK000MB34D, PK000MB34I, EK000EB015 | 100% |  | 2005-10-04 | 2005-10-06 |  |  |  | 2006-07-29 | 0 | 0 | 10 | 00 | PK | MB3 | 000 | PK | MB340 | 101B | CE | M | G | P | 04 |  |  |  |  |  |
| PK000I221K | 000 Everest Control Valves - Issue Formal Purchase Agreement | 5d | 2005-09-14 A | 2006-03-06 A | PK000I221G, EK000YA000 FF+5d | 100% |  | 2005-10-10 | 2005-10-17 |  |  |  | 2006-07-29 | 0 | 0 |  | 00 | PK | I22 | 000 | PK | I2211 |  |  | I | K | P |  |  |  |  |  |  |
| PK000MB34K | MB340 - Fabricate/PO Promise 101-B Finning | 50d | 2005-09-14 A | 2006-05-29 A | PK000MB34J, PK000MB34P FF, PK000MBP3U FF+10d | 100% |  | 2006-05-09 | 2006-07-17 |  |  |  | 2006-07-29 | 0 | 0 | 50 | 00 | PK | MB3 | 000 | PK | MB340 | 101B | CE | MB | H | P | 04 |  |  |  |  |  |
| PK000MB34P | Issue Formal P.O. for MB340 | 3d | 2005-09-14 A | 2005-10-10 A | PK000MB34J | 100% |  | 2005-09-26 | 2005-09-28 |  |  |  | 2006-07-29 | 0 | 0 | 3 | 00 | PK | MB3 | 000 | PK | MB340 | 101B | CE | M | K | P | 04 |  |  |  |  |  |
| PK000PTA0E | Engineered Pipe Supports - Formal Award | 10d | 2005-09-14 A | 2006-01-30 A | PK000PTA0D | 100% |  | 2006-06-28 | 2006-07-11 |  |  |  | 2006-07-29 | 0 | 0 |  | 00 | PK | P60 | 000 | PK | PTA02 |  |  | P | K | P |  |  |  |  |  |  |
| PK000PTA0G | Engineered Pipe Supports - Fab / Exworks | 100d | 2005-09-14 A | 2006-12-29 A | PK000PTA0D, PK000PTA0E FF, PK000PTA0H FF | 100% |  | 2006-06-28 | 2006-11-14 |  |  |  | 2006-07-29 | 0 | 0 |  | 00 | PK | P60 | 000 | PK | PTA02 |  |  | P | H | P |  |  |  |  |  |  |
| PK000MD22A | MD202 - Fabricate/PO Promise TOWERS 104-E | 225d | 2005-09-16 A | 2006-09-29 A | PK000MD22J, PK000MD22P FF | 100% |  | 2005-09-15 | 2006-07-28 |  |  |  | 2006-07-29 | 0 | 0 | 160 | 00 | PK | MD2 | 000 | PK | MD202 | 104E | FE | MD | H | P | 13 |  |  |  |  |  |
| PK000MD22K | MD202 - Fabricate/PO Promise TOWERS 103/105-E | 225d | 2005-09-16 A | 2006-07-06 A | PK000MD22J, PK000MD22P FF | 100% |  | 2005-09-15 | 2006-07-28 |  |  |  | 2006-07-29 | 0 | 0 | 160 | 00 | PK | MD2 | 000 | PK | MD202 |  | FE | MD | H | P | 13 |  |  |  |  |  |
| PK000MD22T | MD202 - Fabricate/PO Promise TOWERS 150-E | 225d | 2005-09-16 A | 2007-03-30 | PK000MD22J, PK000MD22P | 80% | 45d | 2005-09-15 | 2006-07-28 | 100d | 0d | 2007-03-30 | 2006-07-29 | 0 | 0 | 160 | 00 | PK | MD2 | 000 | PK | MD202 | 150E | FE | MD | H | P | 13 |  |  |  |  |  |
| PK000MD32P | Issue Formal P.O. for MD302 | 10d | 2005-09-16 A | 2005-10-07 A | EK000MD32E, PK000MD32J | 100% |  | 2005-09-12 | 2005-09-23 |  |  |  | 2006-07-29 | 0 | 0 |  | 00 | PK | MD3 | 000 | PK | MD302 | 104D1 | CE | M | K | P |  | X |  |  |  |  |
| PK000MD34K | MD304 - Fabricate/PO Promise 106-D, 109-DA/B | 260d | 2005-09-16 A | 2007-02-28 | PK000MD34J, PK000MD34P FF | 91% | 23d | 2005-09-12 | 2006-09-12 | 200d | 0d | 2007-02-28 | 2006-07-29 | 0 | 0 | 260 | 00 | PK | MD3 | 000 | PK | MD304 | 106D | CE | MD | H | P | 13 |  |  |  |  |  |
| PK000MD34P | Issue Formal P.O. for MD304 | 3d | 2005-09-16 A | 2005-10-19 A | EK000MD34E, PK000MD34J | 100% |  | 2005-09-12 | 2005-09-14 |  |  |  | 2006-07-29 | 0 | 0 |  | 00 | PK | MD3 | 000 | PK | MD304 |  | CE | M | K | P |  |  |  |  |  |  |
| PK000MD34Z | MD304 - Fabricate/PO Promise 108-DA/B | 260d | 2005-09-16 A | 2006-12-05 A | PK000MD34J, PK000MD34P FF | 100% |  | 2005-09-12 | 2006-09-12 |  |  |  | 2006-07-29 | 0 | 0 | 260 | 00 | PK | MD3 | 000 | PK | MD304 | 108DA | CE | MD | H | P | 13 |  |  |  |  |  |
| PK000MD42K | MD402 - Fabricate/PO Promise 102-F1, 102-F2 | 175d | 2005-09-16 A | 2007-04-20 | PK000MD42J, PK000MD42P FF | 66% | 60d | 2005-09-12 | 2006-05-16 | 130d | 0d | 2007-04-20 | 2006-07-29 | 0 | 0 | 175 | 00 | PK | MD4 | 000 | PK | MD402 |  | CE | MD | H | P | 13 |  |  |  |  |  |
| PK000MD42N | MD402 - Fabricate/PO Promise 104-F, 144-F | 175d | 2005-09-16 A | 2006-07-07 A | PK000MD42J, PK000MD42P | 100% |  | 2005-09-12 | 2006-05-16 |  |  |  | 2006-07-29 | 0 | 0 | 175 | 00 | PK | MD4 | 000 | PK | MD402 |  | CE | MD | H | P | 13 |  |  |  |  |  |
| PK000MD42P | Issue Formal P.O. for MD402 | 3d | 2005-09-16 A | 2005-10-03 A | EM000MD42E, PK000MD42J | 100% |  | 2005-09-12 | 2005-09-14 |  |  |  | 2006-07-29 | 0 | 0 |  | 00 | PK | MD4 | 000 | PK | MD402 |  | CE | M | K | P |  | Y |  |  |  |  |
| PK000MD44K | MD404 - Fabricate/PO Promise 109-F | 140d | 2005-09-16 A | 2006-06-30 A | PK000MD44P FF, EM02DPI123 FF+100d, PK000MD44J | 100% |  | 2005-10-17 | 2006-05-02 |  |  |  | 2006-07-29 | 0 | 0 | 140 | 00 | PK | MD4 | 000 | PK | MD404 | 109F | NE | MD | H | P | 13 |  |  |  |  |  |
| PK000MD44L | MD404 - Fabricate/PO Promise 107-F | 140d | 2005-09-16 A | 2006-07-05 A | PK000MD44P FF, EM02DPI123 FF+100d, PK000MD44J | 100% |  | 2005-10-17 | 2006-05-02 |  |  |  | 2006-07-29 | 0 | 0 | 140 | 00 | PK | MD4 | 000 | PK | MD404 | 107F | NE | MD | H | P | 13 |  |  |  |  |  |
| PK000MD44P | Issue Formal P.O. for MD404 | 3d | 2005-09-16 A | 2005-10-03 A | EM000MD44E, PK000MD44J | 100% |  | 2005-09-12 | 2005-09-14 |  |  |  | 2006-07-29 | 0 | 0 |  | 00 | PK | MD4 | 000 | PK | MD404 |  | NE | M | K | P |  |  |  |  |  |  |

Notes:
- PK000MD31K: user_text1: L&T order, delays due to flooding. Tube Sheet inspection is rejected.
- PK000MD33K: user_text1: L&T order, delays due to flooding.

| ID | Activity | Duration | Start | Finish | Predecessors | Complete | Remaining | Planned start | Planned finish | Total float | Free float | Expected finish | zData Date | PCA Criticality Index | PCA Duration Sensitivity | user_integer2 | EB02 - UNIT | EB01 - RESP | EB06 - WORK OP | EB03 - AREA | EB05 - DISCIPLINE | EB07 - REQN | EB08 - TAG | EB10 - KEY | EB04 - CLASS | EB09 - IPMS | EB00 - EPC | EB14 - RISK | user_text1 | EB11 - FLAG | EB21 - Rev 2 Risk Associations | Optimistic Duration | Most Likely Duration | Pessimistic Duration |
| --- | --- | --- | --- | --- | --- | --- | --- | --- | --- | --- | --- | --- | --- | --- | --- | --- | --- | --- | --- | --- | --- | --- | --- | --- | --- | --- | --- | --- | --- | --- | --- | --- | --- | --- |
| PK000MD44T | MD404 - Fabricate/PO Promise 132-F | 140d | 2005-09-16 A | 2006-09-29 A | EM02LPI123 FF+100d, PK000MD44P FF, PK000MD44J | 100% |  | 2005-10-17 | 2006-05-02 |  |  |  | 2006-07-29 | 0 | 0 | 140 | 00 | PK | MD4 | 000 | PK | MD404 | 132F | NE | MD | H | P | 13 |  |  |  |  |  |  |
| PK000MD45A | MD405 - Fabricate/PO Promise ISBL DRUMS - 115-F | 125d | 2005-09-16 A | 2006-07-17 A | PK000MD45P FF, PK000MD45J | 100% |  | 2005-09-12 | 2006-03-07 |  |  |  | 2006-07-29 | 0 | 0 | 125 | 00 | PK | MD4 | 000 | PK | MD405 | 115F | CE | MD | H | P | 13 |  |  |  |  |  |  |
| PK000MD45K | MD405 - Fabricate/PO Promise ISBL DRUMS - 156-F & 157-F | 125d | 2005-09-16 A | 2006-07-06 A | PK000MD45P FF, PK000MD45J | 100% |  | 2005-09-12 | 2006-03-07 |  |  |  | 2006-07-29 | 0 | 0 | 125 | 00 | PK | MD4 | 000 | PK | MD405 |  | CE | MD | H | P | 13 |  |  |  |  |  |  |
| PK000MD45P | Issue Formal P.O. for MD405 | 3d | 2005-09-16 A | 2005-10-03 A | EM000MD45E, PK000MD45J | 100% |  | 2005-09-12 | 2005-09-14 |  |  |  | 2006-07-29 | 0 | 0 |  | 00 | PK | MD4 | 000 | PK | MD405 |  | CE | M | K | P |  |  |  |  |  |  |  |
| PK000MD46K | MD411 - Fabricate/PO Promise OSBL DRUMS - 2203-F & 2204-F | 125d | 2005-09-16 A | 2006-06-20 A | PK000MD46P FF, PK000MD46J | 100% |  | 2005-09-12 | 2006-03-07 |  |  |  | 2006-07-29 | 0 | 0 | 125 | 00 | PK | MD4 | 000 | PK | MD411 |  | PE | MD | H | P | 13 | Waiting on 2006-F for order to be complete. |  |  |  |  |  |
| PK000MD46P | Issue Formal P.O. for MD411 | 3d | 2005-09-16 A | 2005-10-03 A | EM000MD46E, PK000MD46J | 100% |  | 2005-09-12 | 2005-09-14 |  |  |  | 2006-07-29 | 0 | 0 |  | 00 | PK | MD4 | 000 | PK | MD411 |  | PE | M | K | P |  |  |  |  |  |  |  |
| PK000MD46T | MD411 - Fabricate/PO Promise OSBL DRUMS - 2006-F | 125d | 2005-09-16 A | 2006-08-07 A | PK000MD46P FF, PK000MD46J | 100% |  | 2005-09-12 | 2006-03-07 |  |  |  | 2006-07-29 | 0 | 0 | 125 | 00 | PK | MD4 | 000 | PK | MD411 | 2006F | PE | MD | H | P | 13 | Waiting on 2006-F for order to be complete. |  |  |  |  |  |
| PK000MD4Q | MD405 - Fabricate/PO Promise ISBL DRUMS - 118-F | 125d | 2005-09-16 A | 2006-07-13 A | PK000MD45P FF, PK000MD45J | 100% |  | 2005-09-12 | 2006-03-07 |  |  |  | 2006-07-29 | 0 | 0 | 125 | 00 | PK | MD4 | 000 | PK | MD405 | 118F | CE | MD | H | P | 13 |  |  |  |  |  |  |
| PK000MBP3M | Requote/Bid Condition/Final Tab - Pressure Parts | 20d | 2005-09-19 A | 2005-09-28 A | EK000MB055, PK000MBP3J, PK000MBP3P FF | 100% |  | 2005-09-27 | 2005-10-24 |  |  |  | 2006-07-29 | 0 | 0 | 20 | 00 | PK | MB3 | 000 | PK | MB311 | 101B | CE | M | G | P | 04 |  | X |  |  |  |  |
| PK000ML33I | Eval Bids & Issue Recmd ML330 | 15d | 2005-09-19 A | 2005-10-14 A | EK000ML33D | 100% |  | 2005-08-29 | 2005-09-16 |  |  |  | 2006-07-29 | 0 | 0 |  | 00 | PK | ML3 | 000 | PK | ML330 | 2101L | NE | M | E | P |  |  |  |  |  |  |  |
| PK000ML51I | Eval Bids & Issue Recmd ML512 | 5d | 2005-09-19 A | 2005-10-07 A | EK000ML51D FF+5d | 100% |  | 2005-07-26 | 2005-08-01 |  |  |  | 2006-07-29 | 0 | 0 |  | 00 | PK | ML5 | 000 | PK | ML512 | 2102L | FE | M | E | P |  |  |  |  |  |  |  |
| PK020MC31G | MC312 - (120,121-C) - Final Negotiate/Interim Award | 3d | 2005-09-19 A | 2005-09-21 A | EK020MC31D, PK020MC31E | 100% |  | 2005-11-01 | 2005-11-03 |  |  |  | 2006-07-29 | 0 | 0 |  | 00 | PK | MC3 | 000 | PK | MC312 |  | PE | M | G | P |  |  | X |  |  |  |  |
| PK000PIA1F | Bulk Piping A/G & U/G - Formal Award | 10d | 2005-09-20 A | 2005-10-04 A | PK000PIA1E, EK000PI020, EK000EB015 | 100% |  | 2005-10-25 | 2005-11-07 |  |  |  | 2006-07-29 | 0 | 0 |  | 00 | PK | P00 | 000 | PK | PIA11 |  |  | P | K | P |  |  |  |  |  |  |  |
| PK020MC31C | MC312 - Fabricate/PO Promise 121-C | 320d | 2005-09-21 A | 2007-03-30 | PK020MC31G, PK020MC31H FF, EK020MC31C FF | 86% | 45d | 2005-11-14 | 2007-02-06 | 90d | 0d | 2007-03-30 | 2006-07-29 | 0 | 0 | 300 | 00 | PK | MC3 | 000 | PK | MC312 | 121C | PE | MC | H | P | 13 | L&T order, delays due to flooding. | HD |  |  |  |  |
| PK020MC31K | MC312 - Fabricate/PO Promise 120-C | 320d | 2005-09-21 A | 2007-03-30 | PK020MC31G, PK020MC31H FF, EK020MC31C FF | 86% | 45d | 2005-11-14 | 2007-02-06 | 90d | 0d | 2007-03-30 | 2006-07-29 | 0 | 0 | 300 | 00 | PK | MC3 | 000 | PK | MC312 | 120C | PE | MC | H | P | 13 | L&T order, delays due to flooding. | HD |  |  |  |  |
| PK000MJ35P | Issue Formal P.O. for MJ305 | 10d | 2005-09-22 A | 2006-03-07 A | PK000MJ35J, EK000YA000 FF+5d | 100% |  | 2005-09-26 | 2005-10-07 |  |  |  | 2006-07-29 | 0 | 0 |  | 00 | PK | MJ3 | 000 | PK | MJ305 |  | CE | MJ | K | P |  |  |  | 03 |  |  |  |
| PK000MJ36P | Issue Formal P.O. for MJ306 | 10d | 2005-09-22 A | 2006-03-07 A | PK000MJ36J, EK000YA000 FF+5d | 100% |  | 2005-10-17 | 2005-10-28 |  |  |  | 2006-07-29 | 0 | 0 |  | 00 | PK | MJ3 | 000 | PK | MJ306 |  | PE | MJ | K | P |  |  |  |  |  |  |  |
| PK020MC31H | MC312 - (120,121-C) - Issue Formal P.O. | 3d | 2005-09-22 A | 2005-10-20 A | PK020MC31G | 100% |  | 2005-11-04 | 2005-11-08 |  |  |  | 2006-07-29 | 0 | 0 |  | 00 | PK | MC3 | 000 | PK | MC312 |  | PE | M | K | P |  |  |  |  |  |  |  |
| PK000MD41K | MD401 - Fabricate/PO Promise 101-F | 200d | 2005-09-23 A | 2006-11-15 A | PK000MD41J, PK000MD41P FF | 100% |  | 2005-09-12 | 2006-06-20 |  |  |  | 2006-07-29 | 0 | 0 | 200 | 00 | PK | MD4 | 000 | PK | MD401 | 101F | CE | MD | H | P | 13 | L&T order, delays due to flooding. |  |  |  |  |  |
| PK000MD43K | MD403 - Fabricate/PO Promise 106-F | 320d | 2005-09-23 A | 2007-04-10 | PK000MD43J, PK000MD43P FF | 84% | 52d | 2005-09-12 | 2006-12-05 | 135d | 0d | 2007-04-10 | 2006-07-29 | 0 | 0 | 250 | 00 | PK | MD4 | 000 | PK | MD403 | 106F | CE | MD | H | P | 13 | L&T order, delays due to flooding. |  |  |  |  |  |
| PK000MD43P | Issue Formal P.O. for MD403 | 3d | 2005-09-23 A | 2005-10-07 A | EK000MD43E, PK000MD43J | 100% |  | 2005-09-12 | 2005-09-14 |  |  |  | 2006-07-29 | 0 | 0 |  | 00 | PK | MD4 | 000 | PK | MD403 | 106F | CE | M | K | P |  |  |  |  |  |  |  |
| PK000MJ35K | MJ305 - Fabricate/PO Promise ISBL ANSI/API PUMPS | 200d | 2005-09-23 A | 2006-11-15 A | PK000MJ35J, PK000MJ35P FF, EK000MJ35E FF | 100% |  | 2005-10-17 | 2006-07-25 |  |  |  | 2006-07-29 | 0 | 0 | 200 | 00 | PK | MJ3 | 000 | PK | MJ305 |  | CE | MJ | H | P | 13 |  |  |  |  |  |  |
| PK000ML43I | Eval Bids & Issue Recmd ML430 | 15d | 2005-09-23 A | 2005-10-13 A | EK000ML43D | 100% |  | 2005-09-26 | 2005-10-14 |  |  |  | 2006-07-29 | 0 | 0 |  | 00 | PK | ML4 | 000 | PK | ML430 | 110L | NE | M | E | P |  |  | Y |  |  |  |  |
| ZZ2070 | MJ305 - Fabricate/PO Promise OSBL ANSI/API PUMPS | 200d | 2005-09-23 A | 2006-12-12 A | PK000MJ35J, PK000MJ35P FF, EK000MJ35E FF | 100% |  | 2005-10-17 | 2006-07-25 |  |  |  | 2006-07-29 | 0 | 0 | 200 | 01 | PK | MJ3 | 01B | PK | MJ305 |  | CE | MJ | H | P | 13 |  |  |  |  |  |  |
| PK000MD51P | Issue Formal P.O. for MD501 | 10d | 2005-09-26 A | 2005-10-07 A | EK000MD51E, PK000MD51J | 100% |  | 2005-09-27 | 2005-10-10 |  |  |  | 2006-07-29 | 0 | 0 |  | 00 | PK | MD5 | 000 | PK | MD501 | 107D | CE | M | K | P |  |  | X |  |  |  |  |
| PK000MB51J | Final Negotiate/Interim Award - MB511 | 15d | 2005-09-26 A | 2005-10-03 A | EK000MB51D, PK000MB51I, EK000EB015 | 100% |  | 2005-09-26 | 2005-10-14 |  |  |  | 2006-07-29 | 0 | 0 | 15 | 00 | PK | MB5 | 000 | PK | MB511 | 101B | CE | M | G | P |  |  | X |  |  |  |  |
| PK000MB65I | Eval Bids & Issue Recmd MB622 | 16d | 2005-09-26 A | 2005-12-21 A | EK000MB65D, PK000MB65H | 100% |  | 2005-09-26 | 2005-10-17 |  |  |  | 2006-07-29 | 0 | 0 | 5 | 00 | PK | MB6 | 000 | PK | MB622 | 101B | CE | M | E | P |  |  |  |  |  |  |  |
| PK000MD22P | Issue Formal P.O. for MD202 | 10d | 2005-09-26 A | 2005-10-03 A | EM000MD22E, PK000MD22J, EK000EB015 | 100% |  | 2005-09-26 | 2005-10-07 |  |  |  | 2006-07-29 | 0 | 0 |  | 00 | PK | MD2 | 000 | PK | MD202 |  | FE | M | K | P |  |  |  |  |  |  |  |
| PK000I220G | Final Negotiation / Interim Award - MOV's | 10d | 2005-09-27 A | 2005-10-03 A | PK000I220E, EK000EB015 | 100% |  | 2005-10-10 | 2005-10-21 |  |  |  | 2006-07-29 | 0 | 0 |  | 00 | PK | I22 | 000 | PK | I2220 |  |  | I | G | P |  |  |  |  |  |  |  |
| PK000MD51K | MD501 - Fabricate/PO Promise 107-D | 160d | 2005-09-27 A | 2006-08-08 A | PK000MD51J, PK000MD51P FF | 100% |  | 2005-10-17 | 2006-05-30 |  |  |  | 2006-07-29 | 0 | 0 | 160 | 00 | PK | MD5 | 000 | PK | MD501 | 107D | CE | MD | H | P | 13 |  | X |  |  |  |  |
| PK000MBP3P | Issue Formal P.O. for 101-B Pressure Parts | 3d | 2005-09-27 A | 2005-11-16 A | PK000MBP3J | 100% |  | 2005-09-27 | 2005-09-29 |  |  |  | 2006-07-29 | 0 | 0 | 3 | 00 | PK | MB3 | 000 | PK | MB311 | 101B | CE | M | K | P | 04 |  | X |  |  |  |  |
| PK000I230G | Final Negotiation / Interim Award - On/Off Valves | 10d | 2005-09-28 A | 2005-10-03 A | PK000I230E, EK000EB015 | 100% |  | 2005-10-12 | 2005-10-25 |  |  |  | 2006-07-29 | 0 | 0 |  | 00 | PK | I22 | 000 | PK | I2230 |  |  | I | G | P |  |  |  |  |  |  |  |
| PK000MBP3T | MB311 - Shop Recv - 101-B Radiant Fittings | 10d | 2005-09-28 A | 2006-04-03 A | PK000MBP3M | 100% |  | 2006-03-27 | 2006-04-07 |  |  |  | 2006-07-29 | 0 | 0 | 10 | 00 | PK | MB3 | 000 | PK | MB311 | 101B | CE | MB | N | P | 04 |  |  |  |  |  |  |
| PK000MJ37I | Eval Bids & Issue Recmd MJ340 | 12d | 2005-09-28 A | 2005-11-18 A | EK000MJ37D | 100% |  | 2005-09-26 | 2005-10-11 |  |  |  | 2006-07-29 | 0 | 0 |  | 00 | PK | MJ3 | 000 | PK | MJ340 |  | NE | M | E | P |  |  |  |  |  |  |  |
| PK000MU31G | Issue MU310 RFQ | 3d | 2005-09-28 A | 2005-09-30 A | PK000MU33J, EK000MU31B FS+30d, EK000MJ005 SS, EK000MU31L | 100% |  | 2005-11-09 | 2005-11-11 |  |  |  | 2006-07-29 | 0 | 0 |  | 00 | PK | MU3 | 000 | PK | MU310 |  | NE | M | B | P |  |  | X |  |  |  |  |
| PK000MB68I | Eval Bids & Issue Recmd MB692 | 15d | 2005-09-30 A | 2006-03-30 A | EK000MB68D, PK000MB68H | 100% |  | 2005-10-11 | 2005-10-31 |  |  |  | 2006-07-29 | 0 | 2.4 | 5 | 00 | PK | MB6 | 000 | PK | MB692 | 101B | CE | MB | E | P |  |  |  | 03 | 7 | 29 | 40 |
| PK000MD31P | Issue Formal P.O. for MD301 | 10d | 2005-09-30 A | 2005-10-13 A | EK000MD31E, PK000MD31J | 100% |  | 2005-09-26 | 2005-10-07 |  |  |  | 2006-07-29 | 0 | 0 |  | 00 | PK | MD3 | 000 | PK | MD301 | 103D | CE | M | K | P |  |  | X |  |  |  |  |
| PK000MJ22K | MJ201 - Fabricate/PO Promise 101-J | 326d | 2005-09-30 A | 2007-02-09 | PK000MJ22J, PK000MJ22P FF, EK000MJ22E FF | 97% | 10d | 2005-11-14 | 2007-02-14 | 86d | 0d | 2007-02-09 | 2006-07-29 | 0 | 0 | 326 | 00 | PK | MJ2 | 000 | PK | MJ201 | 101J | CE | MJ | H | P | 06 |  | X |  |  |  |  |
| PK000MJ22P | Issue Formal P.O. for MJ201 | 10d | 2005-09-30 A | 2005-11-15 A | PK000MJ22J | 100% |  | 2005-10-03 | 2005-10-14 |  |  |  | 2006-07-29 | 0 | 0 | 3 | 00 | PK | MJ2 | 000 | PK | MJ201 | 101J | CE | M | K | P | 06 |  | X |  |  |  |  |
| PK000ML31K | ML313 - Fabricate/PO Promise 160-L | 320d | 2005-09-30 A | 2006-11-09 A | PK000ML31J, PK000ML31P FF | 100% |  | 2005-10-17 | 2007-01-09 |  |  |  | 2006-07-29 | 0 | 0 | 320 | 00 | PK | ML3 | 000 | PK | ML313 | 160L | FE | ML | H | P | 13 |  | X |  |  |  |  |
| PK000ML31P | Issue Formal P.O. for ML313 | 10d | 2005-09-30 A | 2005-10-25 A | EK000ML31E SS, PK000ML31J | 100% |  | 2005-10-28 | 2005-11-11 |  |  |  | 2006-07-29 | 0 | 0 |  | 00 | PK | ML3 | 000 | PK | ML313 | 160L | FE | M | K | P |  |  |  |  |  |  |  |
| PK000MB51P | Issue Formal P.O. for MB511 | 3d | 2005-10-03 A | 2006-01-06 A | PK000MB51J | 100% |  | 2005-10-17 | 2005-10-19 |  |  |  | 2006-07-29 | 0 | 0 | 3 | 00 | PK | MB5 | 000 | PK | MB511 | 101B | CE | M | K | P |  |  | X |  |  |  |  |
| PK000MBP3K | MB311 - Fab/Exworks 101-B Radiant Tube & Pipe | 150d | 2005-10-03 A | 2006-05-01 A | EK000MB055, PK000MBP3J, PK000MBP3P FF | 100% |  | 2005-10-17 | 2006-05-16 |  |  |  | 2006-07-29 | 0 | 0 | 150 | 00 | PK | MB3 | 000 | PK | MB311 | 101B | CE | MB | H | P | 04 |  | X |  |  |  |  |
| PK000MBP3O | MB311 - Fab/Exworks 101-B Convection Tube & Pipe | 150d | 2005-10-03 A | 2006-05-16 A | EK000MB075, PK000MBP3J | 100% |  | 2005-10-17 | 2006-05-16 |  |  |  | 2006-07-29 | 0 | 0 | 150 | 00 | PK | MB3 | 000 | PK | MB311 | 101B | CE | MB | H | P | 04 |  | X |  |  |  |  |
| PK000MBP3Q | MB311 - Fab/Exworks 101-B Convection Fittings | 150d | 2005-10-03 A | 2006-05-16 A | EK000MB075, PK000MBP3J | 100% |  | 2005-10-17 | 2006-05-16 |  |  |  | 2006-07-29 | 0 | 0 | 150 | 00 | PK | MB3 | 000 | PK | MB311 | 101B | CE | MB | H | P | 04 |  | X |  |  |  |  |
| PK000MBP3R | MB311 - Fab/Exworks 101-B Crossover Tube & Pipe | 150d | 2005-10-03 A | 2006-06-05 A | EK000MB075, PK000MBP3J | 100% |  | 2005-10-17 | 2006-05-16 |  |  |  | 2006-07-29 | 0 | 0 | 150 | 00 | PK | MB3 | 000 | PK | MB311 | 101B | CE | MB | H | P | 04 |  | X |  |  |  |  |
| PK000MBP3S | MB311 - Fab/Exworks 101-B Crossover Fittings | 150d | 2005-10-03 A | 2006-06-05 A | EK000MB075, PK000MBP3J | 100% |  | 2005-10-17 | 2006-05-16 |  |  |  | 2006-07-29 | 0 | 0 | 150 | 00 | PK | MB3 | 000 | PK | MB311 | 101B | CE | MB | H | P | 04 |  | X |  |  |  |  |
| PK000MU31H | Receive Quotes MU310 | 15d | 2005-10-03 A | 2005-10-24 A | PK000MU31G | 100% |  | 2005-11-14 | 2005-12-02 |  |  |  | 2006-07-29 | 0 | 0 |  | 00 | PK | MU3 | 000 | PK | MU310 |  | NE | M | C | P |  |  | X |  |  |  |  |
| PK000MD21P | Issue Formal P.O. for MD201 | 10d | 2005-10-03 A | 2005-10-19 A | PK000MD21J | 100% |  | 2005-10-03 | 2005-10-14 |  |  |  | 2006-07-29 | 0 | 0 |  | 00 | PK | MD2 | 000 | PK | MD201 |  | FE | M | K | P |  |  |  |  |  |  |  |
| PK000MB51K | MB511 - Fabricate/PO Promise 101-B Insulation | 120d | 2005-10-04 A | 2007-01-29 | PK000MB51J, PK000MB51P FF | 99% | 1d | 2005-10-17 | 2006-04-04 | 204d | 0d |  | 2006-07-29 | 0 | 0 | 120 | 00 | PK | MB5 | 000 | PK | MB511 | 101B | CE | MB | H | P |  |  | X |  |  |  |  |
| PK000MB33P | MB333 - Issue Formal P.O. 101-B | 3d | 2005-10-05 A | 2005-10-07 A | PK000MB33J | 100% |  | 2005-10-07 | 2005-10-11 |  |  |  | 2006-07-29 | 0 | 0 | 3 | 00 | PK | MB3 | 000 | PK | MB333 | 101B | CE | M | K | P | 04 |  |  |  |  |  |  |
| PK000MC61J | Final Negotiate/Interim Award - MC610 | 3d | 2005-10-06 A | 2005-10-10 A | PK000MC61I, PK000MC61M, EK000EB015 | 100% |  | 2005-10-24 | 2005-10-26 |  |  |  | 2006-07-29 | 0 | 0 |  | 00 | PK | MC6 | 000 | PK | MC610 |  | PE | M | G | P |  |  | X |  |  |  |  |
| PK000MU22I | Eval Bids & Issue Recmd MU222 | 15d | 2005-10-07 A | 2005-10-20 A | EK000MU22D | 100% |  | 2005-10-17 | 2005-11-04 |  |  |  | 2006-07-29 | 0 | 0 |  | 00 | PK | MU2 | 000 | PK | MU222 | 2401U | NE | M | E | P |  |  |  |  |  |  |  |
| PK000MU41K | MU410 - Fabricate/PO Promise 2002-U PKG BOILER | 225d | 2005-10-07 A | 2006-07-12 A | PK000MU41J, PK000MU41P FF | 100% |  | 2005-10-17 | 2006-08-29 |  |  |  | 2006-07-29 | 0 | 0 | 225 | 00 | PK | MU4 | 000 | PK | MU410 | 2002U | PE | MU | H | P | 05 |  | X |  |  |  |  |
| PK000MJ34J | Final Negotiate/Interim Award - MJ304 | 15d | 2005-10-10 A | 2005-11-14 A | EK000EB015 FF, EK000MJ34F | 100% |  | 2005-10-17 | 2005-11-04 |  |  |  | 2006-07-29 | 0 | 0 | 10 | 00 | PK | MJ3 | 000 | PK | MJ304 | 2003J | FE | M | G | P |  |  | X |  |  |  |  |
| PK000ML51J | Final Negotiate/Interim Award - ML512 | 3d | 2005-10-10 A | 2005-10-12 A | PK000ML51I, EK000EB015 | 100% |  | 2005-09-26 | 2005-09-28 |  |  |  | 2006-07-29 | 0 | 0 |  | 00 | PK | ML5 | 000 | PK | ML512 | 2102L | FE | M | G | P |  |  |  |  |  |  |  |
| PK000MU33J | Final Negotiate/Interim Award - MU330 | 10d | 2005-10-10 A | 2005-11-29 A | EK000EB015, EK000MU33F, PK000MU33I | 100% |  | 2005-10-17 | 2005-10-28 |  |  |  | 2006-07-29 | 0 | 0 |  | 00 | PK | MU3 | 000 | PK | MU330 | 2001U | FE | M | G | P |  |  |  |  |  |  |  |
| PK000MU61K | MU611 - Fabricate/PO Promise 2101-U, 2101-UJA Thru UJG CW TWR & Fans | 140d | 2005-10-10 A | 2006-05-15 A | PK000MU61J, PK000MU61P FF | 100% |  | 2005-10-17 | 2006-05-02 |  |  |  | 2006-07-29 | 0 | 0 |  | 00 | PK | MU6 | 000 | PK | MU611 | 2101U | PE | MU | H | P |  |  |  |  |  |  |  |
| PK000MU61T | MU611 - Fabricate/PO Promise 2101-UJA Thru UJGM CW Motors | 140d | 2005-10-10 A | 2006-05-15 A | PK000MU61J, PK000MU61P FF | 100% |  | 2005-10-17 | 2006-05-02 |  |  |  | 2006-07-29 | 0 | 0 |  | 00 | PK | MU6 | 000 | PK | MU611 | 2101U | PE | MU | H | P |  |  |  |  |  |  |  |
| PK000MC61K | MC610 - Fabricate/PO Promise DBL PIPE EXCH 188-CA | 170d | 2005-10-11 A | 2006-07-31 A | PK000MC61J, PK000MC61P FF, EK000MC61E FF | 100% |  | 2005-10-27 | 2006-06-23 |  |  |  | 2006-07-29 | 0 | 0 | 160 | 00 | PK | MC6 | 000 | PK | MC610 | 188CA | PE | MC | H | P | 13 |  | X |  |  |  |  |
| PK000MC61L | MC610 - Fabricate/PO Promise DBL PIPE EXCH 161-C | 170d | 2005-10-11 A | 2006-05-09 A | PK000MC61J, PK000MC61P FF, EK000MC61E FF | 100% |  | 2005-10-27 | 2006-06-23 |  |  |  | 2006-07-29 | 0 | 0 | 160 | 00 | PK | MC6 | 000 | PK | MC610 | 161C | PE | MC | H | P | 13 |  | X |  |  |  |  |
| PK000MC61P | Issue Formal P.O. for MC610 | 10d | 2005-10-11 A | 2005-11-11 A | PK000MC61J | 100% |  | 2005-10-17 | 2005-10-28 |  |  |  | 2006-07-29 | 0 | 0 |  | 00 | PK | MC6 | 000 | PK | MC610 |  | PE | M | K | P |  |  | X |  |  |  |  |
| PK000MBP4K | MB312 - Fab/PO Promise 101-B Radiant Cast Fittings | 220d | 2005-10-12 A | 2006-07-11 A | PK000MBP4J, PK000MBP4P FF | 100% |  | 2005-10-17 | 2006-08-22 |  |  |  | 2006-07-29 | 0 | 0 | 180 | 00 | PK | MB3 | 000 | PK | MB312 | 101B | CE | MB | H | P | 04 |  | X |  |  |  |  |
| PK000MBP4M | Requote/Bid Condition/Final Tab - Cast Material | 10d | 2005-10-12 A | 2005-10-17 A | PK000MBP4K SS | 100% |  | 2006-09-01 | 2006-09-14 |  |  |  | 2006-07-29 | 0 | 0 | 10 | 00 | PK | MB3 | 000 | PK | MB312 | 101B | CE | M | G | P | 04 |  |  |  |  |  |  |
| PK000MBP4Q | MB312 - Fab/PO Promise 101-B Radiant Cast Stringer Grids | 220d | 2005-10-12 A | 2006-07-31 A | PK000MBP4J, PK000MBP4P FF | 100% |  | 2005-10-17 | 2006-08-22 |  |  |  | 2006-07-29 | 0 | 0 | 180 | 00 | PK | MB3 | 000 | PK | MB312 | 101B | CE | MB | H | P | 04 |  | X |  |  |  |  |
| PK000MBP4R | MB312 - Fab/PO Promise 101-B Radiant Cast Tube/Riser/Manifold | 220d | 2005-10-12 A | 2006-06-30 A | PK000MBP4J, PK000MBP4P FF | 100% |  | 2005-10-17 | 2006-08-22 |  |  |  | 2006-07-29 | 0 | 0 | 180 | 00 | PK | MB3 | 000 | PK | MB312 | 101B | CE | MB | H | P | 04 |  | X |  |  |  |  |
| PK000ML51K | ML512 - Fabricate/PO Promise 2102-L LOADING ARM | 190d | 2005-10-12 A | 2006-06-28 A | PK000ML51J, EK000ML51E FF | 100% |  | 2005-10-17 | 2006-07-11 |  |  |  | 2006-07-29 | 0 | 0 | 190 | 00 | PK | ML5 | 000 | PK | ML512 | 2102L | FE | ML | H | P | 13 |  |  |  |  |  |  |
| PK000ML51P | Issue Formal P.O. for ML512 | 10d | 2005-10-12 A | 2005-10-28 A | PK000ML51J | 100% |  | 2005-10-17 | 2005-10-28 |  |  |  | 2006-07-29 | 0 | 0 |  | 00 | PK | ML5 | 000 | PK | ML512 | 2102L | FE | M | K | P |  |  |  |  |  |  |  |
| PK000ML43J | Final Negotiate/Interim Award - ML430 | 3d | 2005-10-13 A | 2005-11-14 A | PK000ML43I, EK000EB015 | 100% |  | 2005-10-17 | 2005-10-19 |  |  |  | 2006-07-29 | 0 | 0 |  | 00 | PK | ML4 | 000 | PK | ML430 | 110L | NE | M | G | P |  |  | Y |  |  |  |  |
| PK000MB71G | Issue MB710 RFQ | 3d | 2005-10-14 A | 2005-10-18 A | EK000MB64F | 100% |  | 2005-08-08 | 2005-08-10 |  |  |  | 2006-07-29 | 0 | 0 | 3 | 00 | PK | MB7 | 000 | PK | MB710 | 2202B | CE | M | B | P |  |  | X |  |  |  |  |

| ID | Activity | Duration | Start | Finish | Predecessors | Complete | Remaining | Planned start | Planned finish | Total float | Free float | Expected finish | Calendar | zData Date | PCA Criticality Index | PCA Duration Sensitivity | EB02 - UNIT | EB01 - RESP | EB06 - WORK OP | EB03 - AREA | EB05 - DISCIPLINE | EB07 - REQN | EB08 - TAG | EB10 - KEY | EB04 - CLASS | EB09 - IPMS | EB00 - EPC | user_integer2 | EB11 - FLAG | EB14 - RISK | Optimistic Duration | Most Likely Duration | Pessimistic Duration | EB12 - TEMP | EB21 - Rev 2 Risk Associations | zComments |
| --- | --- | --- | --- | --- | --- | --- | --- | --- | --- | --- | --- | --- | --- | --- | --- | --- | --- | --- | --- | --- | --- | --- | --- | --- | --- | --- | --- | --- | --- | --- | --- | --- | --- | --- | --- | --- |
| PK000ML33J | Final Negotiate/Interim Award - ML330 | 3d | 2005-10-14 A | 2005-10-21 A | PK000ML33I, EK000EB015 | 100% |  | 2005-10-17 | 2005-10-19 |  |  |  |  | 2006-07-29 | 0 | 0 | 00 | PK | ML3 | 000 | PK | ML330 | 2101L | NE | M | G | P |  |  |  |  |  |  |  |  |  |
| PK000PIA4F | Product Line Piping - Formal Award | 10d | 2005-10-14 A | 2005-11-02 A | PK000PIA4E | 100% |  | 2005-10-10 | 2005-10-21 |  |  |  |  | 2006-07-29 | 0 | 0 | 00 | PK | P00 | 000 | PK | PIA41 |  |  | P | K | P |  |  |  |  |  |  |  |  |  |
| PK000I220K | Issue Formal Purchase Agreement. - MOV's | 5d | 2005-10-17 A | 2006-01-13 A | PK000I220G | 100% |  | 2005-10-17 | 2005-10-21 |  |  |  |  | 2006-07-29 | 0 | 0 | 00 | PK | I22 | 000 | PK | I2220 |  |  | I | K | P |  |  |  |  |  |  |  |  |  |
| PK000I230K | Issue Formal Purchase Agreement. - On/Off Valves | 5d | 2005-10-17 A | 2006-01-13 A | PK000I230G | 100% |  | 2005-10-17 | 2005-10-21 |  |  |  |  | 2006-07-29 | 0 | 0 | 00 | PK | I22 | 000 | PK | I2230 |  |  | I | K | P |  |  |  |  |  |  |  |  |  |
| PK000MD21K | MD201 - Fabricate/PO Promise 101-E | 395d | 2005-10-17 A | 2007-01-31 | EM02LPI123 FF+80d, PK000MD21J, PK000MD21P FF, EM03FPI123 FF+80d, EM02API123 FF+80d, EM02DPI123 FF+80d, EM02EPI123 FF+80d, EM02FPI123 FF+80d, EM02GPI123 FF+80d, EM02JPI123 FF+80d, EM02KPI123 FF+80d, EM02MPI123 FF+80d, EM02NPI123 FF+80d, EM02PPI123 FF+80d, EM02QPI123 FF+80d, EM03API123 FF+80d, EM03BPI123 FF+80d, EM03CPI123 FF+80d, EM03DPI123 FF+80d, EM03EPI123 FF+80d, EM01API123 FF+80d, EM01BPI123 FF+80d, EM02CPI123 FF+80d, EM02HPI123 FF+80d, EM01CPI120 SF+90d, EK000MD21E FF, EM03YPI120 SF+90d, EM05API120 SF+100d, EM05API200 FF+80d | 99% | 3d | 2005-10-17 | 2007-04-24 | 93d | 0d | 2007-01-31 |  | 2006-07-29 | 0 | 0 | 00 | PK | MD2 | 000 | PK | MD201 | 101E | FE | MD | H | P | 280 | HD | 12 |  |  |  |  |  |  |
| PK000MD21M | MD201 - Fabricate/PO Promise 102-E | 395d | 2005-10-17 A | 2007-04-04 | PK000MD21J, PK000MD21P, EK000MD21E FF | 88% | 48d | 2005-10-17 | 2007-04-24 | 62d | 0d | 2007-04-04 |  | 2006-07-29 | 0 | 0 | 00 | PK | MD2 | 000 | PK | MD201 | 102E | FE | MD | H | P | 280 | HD | 12 |  |  |  |  |  |  |
| PK000MU21I | Eval Bids & Issue Recmd MU221 | 15d | 2005-10-17 A | 2005-10-20 A | EK000MU21D | 100% |  | 2005-10-17 | 2005-11-04 |  |  |  |  | 2006-07-29 | 0 | 0 | 00 | PK | MU2 | 01E | PK | MU221 | 2402L | NE | M | E | P |  |  |  |  |  |  |  |  |  |
| PK000MB71H | Receive Quotes for MB710 | 15d | 2005-10-18 A | 2005-11-14 A | PK000MB71G | 100% |  | 2005-08-11 | 2005-08-31 |  |  |  |  | 2006-07-29 | 0 | 0 | 00 | PK | MB7 | 000 | PK | MB710 | 2202B | CE | M | C | P | 15 | X |  |  |  |  |  |  |  |
| PK000MBP4Z | MB312 - Shop Recv. 101-B Radiant Cast Fittings | 10d | 2005-10-18 A | 2006-04-03 A | PK000MBP4M | 100% |  | 2006-03-27 | 2006-04-07 |  |  |  |  | 2006-07-29 | 0 | 0 | 00 | PK | MB3 | 000 | PK | MB312 | 101B | CE | MB | N | P | 10 |  | 04 |  |  |  |  |  |  |
| PK000MU21J | Final Negotiate/Interim Award - MU221 | 3d | 2005-10-20 A | 2005-12-05 A | PK000MU21I, EK000EB015 | 100% |  | 2005-11-11 | 2005-11-15 |  |  |  |  | 2006-07-29 | 0 | 0 | 00 | PK | MU2 | 01E | PK | MU221 | 2402L | NE | M | G | P |  |  |  |  |  |  |  |  |  |
| PK000MU22J | Final Negotiate/Interim Award - MU222 | 3d | 2005-10-20 A | 2005-12-05 A | EK000MU22F FF, PK000MU22I, EK000EB015 | 100% |  | 2005-11-01 | 2005-11-03 |  |  |  |  | 2006-07-29 | 0 | 0 | 00 | PK | MU2 | 000 | PK | MU222 | 2401U | NE | M | G | P |  |  |  |  |  |  |  |  |  |
| PK000MD47J | Final Negotiate/Interim Award - MD406 | 10d | 2005-10-21 A | 2005-10-25 A | EM000MD47D, PK000MD47I, EK000EB015 | 100% |  | 2005-10-24 | 2005-11-04 |  |  |  |  | 2006-07-29 | 0 | 0 | 00 | PK | MD4 | 000 | PK | MD406 | 103F | CE | M | G | P |  |  |  |  |  |  |  |  |  |
| PK000ML33K | ML330 - Fabricate/Po Promise 2101-L | 170d | 2005-10-21 A | 2006-09-11 A | PK000ML33J, PK000ML33J FF, PK000ML33P FF | 100% |  | 2005-10-20 | 2006-06-16 |  |  |  |  | 2006-07-29 | 0 | 0 | 00 | PK | ML3 | 000 | PK | ML330 | 2101L | NE | ML | H | P | 170 |  | 13 |  |  |  |  |  |  |
| PK000ML33P | Issue Formal P.O. for ML330 | 3d | 2005-10-21 A | 2005-11-30 A | PK000ML33J, EK000ML33E FF | 100% |  | 2005-10-20 | 2005-10-24 |  |  |  |  | 2006-07-29 | 0 | 0 | 00 | PK | ML3 | 000 | PK | ML330 | 2101L | NE | M | K | P |  |  |  |  |  |  |  |  |  |
| PK000MD47P | Issue Formal P.O. for MD406 | 10d | 2005-10-25 A | 2005-11-03 A | EM000MD47E, PK000MD47J, EK000EB015 | 100% |  | 2005-10-17 | 2005-10-28 |  |  |  |  | 2006-07-29 | 0 | 0 | 00 | PK | MD4 | 000 | PK | MD406 | 103F | CE | M | K | P |  |  |  |  |  |  |  |  |  |
| PK000MU33P | Issue Formal P.O. for MU330 | 3d | 2005-10-27 A | 2006-03-23 A | EK000MU33E, PK000MU33J, EK000YA000 FF+5d | 100% |  | 2005-11-28 | 2005-11-30 |  |  |  |  | 2006-07-29 | 0 | 0 | 00 | PK | MU3 | 000 | PK | MU330 | 2001U | FE | MU | K | P |  |  |  | 5 | 6 | 20 | Y | 03 |  |
| PK000PSA8E | 000 Relief Valves - Final Negotiation / Interim Award | 10d | 2005-10-27 A | 2005-10-28 A | PK000PSA8D, EK000EB015 | 100% |  | 2006-03-06 | 2006-03-17 |  |  |  |  | 2006-07-29 | 0 | 0 | 00 | PK | I22 | 000 | PK | PSA08 |  | IR | P | G | P |  |  |  |  |  |  |  |  |  |
| PK000PSA8F | 000 Relief Valves - Issue Formal Blanket P.O. | 5d | 2005-10-28 A | 2006-01-20 A | PK000PSA8E | 100% |  | 2006-03-20 | 2006-03-24 |  |  |  |  | 2006-07-29 | 0 | 0 | 00 | PK | I22 | 000 | PK | PSA08 |  | IR | P | K | P |  |  |  |  |  |  |  |  |  |
| PK000PSA8G | 000 Relief Valves - Fabricate/Exworks | 130d | 2005-10-28 A | 2007-01-29 | PK000PSA8F | 100% | 0d | 2006-02-27 | 2006-08-25 | 257d | 0d | 2006-09-26 |  | 2006-07-29 | 0 | 0 | 00 | PK | I22 | 000 | PK | PSA08 |  | IR | P | H | P |  | N |  |  |  |  |  |  |  |
| PK000MD47K | MD406 - Fabricate/PO Promise ISBL DRUMS | 180d | 2005-10-31 A | 2006-07-06 A | EM02LPI123 FF+100d, PK000MD47P FF, PK000MD47J | 100% |  | 2005-10-31 | 2006-07-11 |  |  |  |  | 2006-07-29 | 0 | 0 | 00 | PK | MD4 | 000 | PK | MD406 | 103F | CE | MD | H | P | 180 |  | 13 |  |  |  |  |  |  |
| PK000MU33K | MU330 - Fabricate/PO Promise 2001-U | 260d | 2005-10-31 A | 2006-12-12 A | PK000MU33J, PK000MU33P FF | 100% |  | 2005-10-31 | 2006-10-31 |  |  |  |  | 2006-07-29 | 0 | 0 | 00 | PK | MU3 | 000 | PK | MU330 | 2001U | FE | MU | H | P | 260 |  | 13 |  |  |  |  |  |  |
| PK000PIA1K | Bulk Piping A/G - Fab/Exworks (CROME) | 190d | 2005-10-31 A | 2006-07-25 A | PK000PIA1F | 100% |  |  |  |  |  |  |  | 2006-07-29 | 0 | 0 | 00 | PK | P00 | 000 | PK | PIA11 |  |  | P | H | P | 30 |  | 01 | 170 | 190 | 200 |  | 02 |  |
| PK000PIA4G | Product Line Piping - Fab/Exworks +/- 5700 Mts. | 130d | 2005-10-31 A | 2006-07-03 A | PK000PIA4E | 100% |  | 2005-10-31 | 2006-05-02 |  |  |  |  | 2006-07-29 | 0 | 7.1 | 00 | PK | P00 | 000 | PK | PIA41 |  |  | P | H | P | 30 |  | 01 | 120 | 130 | 140 |  | 02 |  |
| PK000MB42J | Final Negotiate/Interim Award - MB420 | 3d | 2005-11-01 A | 2005-12-08 A | EK000MB42D, PK000MB42I, EK000EB015 | 100% |  | 2005-11-14 | 2005-11-16 |  |  |  |  | 2006-07-29 | 0 | 0 | 00 | PK | MB4 | 000 | PK | MB420 | 101B | CE | M | G | P | 10 |  |  |  |  |  |  |  |  |
| PK000MC21J | Final Negotiate/Interim Award - MC210 | 23d | 2005-11-01 A | 2005-11-09 A | EK000MC21F, PK000MC21I, PK000MC21M, EK000EB015 | 100% |  | 2005-11-14 | 2005-12-14 |  |  |  |  | 2006-07-29 | 0 | 0 | 00 | PK | MC2 | 000 | PK | MC210 |  | PE | M | G | P |  | X |  |  |  |  |  |  |  |
| PK000MC23J | Final Negotiate/Interim Award - MC230 | 4d | 2005-11-01 A | 2005-11-09 A | EK000MC23D, PK000MC23I, PK000MC23M, EK000EB015 | 100% |  | 2005-10-31 | 2005-11-03 |  |  |  |  | 2006-07-29 | 0 | 0 | 00 | PK | MC2 | 000 | PK | MC230 |  | PE | M | G | P |  | X |  |  |  |  |  |  |  |
| PK000PR20E | PR201 KAAP Catalyst - Eval Bids & Issue Recmd | 15d | 2005-11-02 A | 2005-11-17 A | EK020PR20D, PK000PR20C | 100% |  | 2005-12-01 | 2005-12-21 |  |  |  |  | 2006-07-29 | 0 | 0 | 00 | PK | MB2 | 000 | PK | PR201 |  | CE | M | E | P | 5 |  |  |  |  |  |  |  |  |
| PK000I352E | SIS - Eval Bids/Issue Recmd | 5d | 2005-11-03 A | 2006-01-27 A | EK000I352D FS+3d, PK000I352C | 100% |  | 2005-11-17 | 2005-11-23 |  |  |  |  | 2006-07-29 | 0 | 0 | 00 | PK | I35 | 000 | IC | I3520 |  |  | I | E | P |  | X |  |  |  |  |  |  |  |
| PK000IC350 | DCS - Vendor Update Pricing / Quote | 5d | 2005-11-07 A | 2005-11-11 A | EK000IC351 | 100% |  | 2005-12-19 | 2005-12-23 |  |  |  |  | 2006-07-29 | 0 | 0 | 00 | PK | I35 | 000 | IC | I3510 |  |  | I |  | E |  |  |  |  |  |  |  |  |  |
| PK000MU31I | Eval Bids & Issue Recmd MU310 | 5d | 2005-11-08 A | 2006-02-03 A | EK000MU31D, EK000MU31E | 100% |  | 2005-11-14 | 2005-11-18 |  |  |  |  | 2006-07-29 | 0 | 0 | 00 | PK | MU3 | 000 | PK | MU310 |  | NE | M | E | P |  |  |  |  |  |  |  |  |  |
| PK000ML42J | Final Negotiate/Interim Award - ML420 | 5d | 2005-11-08 A | 2005-11-11 A | PK000ML42M, EK000EB015 | 100% |  | 2005-11-08 | 2005-11-14 |  |  |  |  | 2006-07-29 | 0 | 0 | 00 | PK | ML4 | 000 | PK | ML420 |  | NE | M | G | P |  | Y |  |  |  |  |  |  |  |
| PK000MC21K | MC210 - Fabricate/PO Promise 110/115/124/128/130/133/134/160/167/173/174-C | 200d | 2005-11-09 A | 2006-09-28 A | PK000MC21J, PK000MC21P FF | 100% |  | 2005-10-31 | 2006-08-08 |  |  |  |  | 2006-07-29 | 0 | 0 | 00 | PK | MC2 | 000 | PK | MC210 |  | PE | MC | H | P | 180 |  | 13 |  |  |  |  |  |  |
| PK000MC21N | MC210 - Fabricate/PO Promise 127-C | 200d | 2005-11-09 A | 2006-07-10 A | PK000MC21J | 100% |  | 2005-10-31 | 2006-08-08 |  |  |  |  | 2006-07-29 | 0 | 0 | 00 | PK | MC2 | 000 | PK | MC210 | 127C | PE | MC | H | P | 180 |  | 13 |  |  |  |  |  |  |
| PK000MC21P | Issue Formal P.O. for MC210 | 10d | 2005-11-09 A | 2006-01-04 A | EK000MC21E, PK000MC21J | 100% |  | 2005-11-23 | 2005-12-06 |  |  |  |  | 2006-07-29 | 0 | 0 | 00 | PK | MC2 | 000 | PK | MC210 |  | PE | M | K | P |  | Y |  |  |  |  |  |  |  |
| PK000MC23A | MC230 - Fabricate/PO Promise 106-C & 109-C | 200d | 2005-11-09 A | 2006-07-31 A | PK000MC23J, PK000MC23P FF | 100% |  | 2005-10-31 | 2006-08-08 |  |  |  |  | 2006-07-29 | 0 | 0 | 00 | PK | MC2 | 000 | PK | MC230 |  | PE | MC | H | P | 175 |  | 13 |  |  |  |  |  |  |
| PK000MC23K | MC230 - Fabricate/PO Promise 105/107/172/183-C | 200d | 2005-11-09 A | 2006-10-16 A | PK000MC23J, PK000MC23P FF | 100% |  | 2005-10-31 | 2006-08-08 |  |  |  |  | 2006-07-29 | 0 | 0 | 00 | PK | MC2 | 000 | PK | MC230 |  | PE | MC | H | P | 175 |  | 13 |  |  |  |  |  |  |
| PK000MC23N | MC230 - Fabricate/PO Promise 111/114-C | 200d | 2005-11-09 A | 2006-10-27 A | PK000MC23J, PK000MC23P | 100% |  | 2005-10-31 | 2006-08-08 |  |  |  |  | 2006-07-29 | 0 | 0 | 00 | PK | MC2 | 000 | PK | MC230 | 114C | PE | MC | H | P | 175 |  | 13 |  |  |  |  |  |  |
| PK000MC23P | Issue Formal P.O. for MC230 | 10d | 2005-11-09 A | 2005-12-09 A | EK000MC23E, PK000MC23J | 100% |  | 2005-11-14 | 2005-11-25 |  |  |  |  | 2006-07-29 | 0 | 0 | 00 | PK | MC2 | 000 | PK | MC230 |  | PE | M | K | P |  |  |  |  |  |  |  |  |  |
| PK000ML42K | ML420 - Fabricate/PO Promise CARTRIDGE FILTERS | 90d | 2005-11-11 A | 2006-04-28 A | PK000ML42J, PK000ML42P FF | 100% |  | 2005-11-08 | 2006-03-15 |  |  |  |  | 2006-07-29 | 0 | 0 | 00 | PK | ML4 | 000 | PK | ML420 |  | NE | ML | H | P |  |  |  |  |  |  |  |  |  |
| PK000ML42P | Issue Formal P.O. for ML420 | 10d | 2005-11-11 A | 2005-11-30 A | EK000ML42E FF+5d, PK000ML42J | 100% |  | 2005-11-29 | 2005-12-12 |  |  |  |  | 2006-07-29 | 0 | 0 | 00 | PK | ML4 | 000 | PK | ML420 |  | NE | M | K | P |  |  |  |  |  |  |  |  |  |
| PK000MC32J | Final Negotiate/Interim Award - MC311 | 3d | 2005-11-14 A | 2005-11-16 A | EK000MC32D, EK000MC32F, PK000MC32I, EK000EB015, EK000MC32P | 100% |  | 2005-12-01 | 2005-12-05 |  |  |  |  | 2006-07-29 | 0 | 0 | 00 | PK | MC3 | 000 | PK | MC311 |  | PE | M | G | P |  | X |  |  |  |  |  |  |  |
| PK000ML43K | ML430 - Fabricate/PO Promise 110-L BENFIELD MIXER | 80d | 2005-11-14 A | 2006-04-11 A | PK000ML43J, PK000ML43P FF | 100% |  | 2005-10-31 | 2006-02-21 |  |  |  |  | 2006-07-29 | 0 | 0 | 00 | PK | ML4 | 000 | PK | ML430 | 110L | NE | ML | H | P |  |  |  |  |  |  |  |  |  |
| PK000ML43P | Issue Formal P.O. for ML430 | 10d | 2005-11-14 A | 2005-12-06 A | EK000ML43E SS, PK000ML43J | 100% |  | 2005-12-19 | 2006-01-03 |  |  |  |  | 2006-07-29 | 0 | 0 | 00 | PK | ML4 | 000 | PK | ML430 | 110L | NE | M | K | P |  |  |  |  |  |  |  |  |  |
| PK000MJ34K | MJ304 - Fabricate/PO Promise MP BFW PUMPS | 250d | 2005-11-14 A | 2007-02-15 | PK000MJ34J, PK000MJ34P FF | 94% | 14d | 2005-11-14 | 2006-10-31 | 186d | 0d | 2007-02-15 |  | 2006-07-29 | 0 | 0 | 00 | PK | MJ3 | 000 | PK | MJ304 | 2003J | FE | MJ | H | P | 250 |  | 13 |  |  |  |  |  |  |
| PK000MC32K | MC311 - Fabricate/PO Promise KBR S&T EXCH | 150d | 2005-11-16 A | 2007-02-15 | PK000MC32J, PK000MC32P FF, EK000MC32E FF | 91% | 14d | 2005-12-06 | 2006-07-05 | 76d | 0d | 2007-02-15 |  | 2006-07-29 | 0 | 0 | 00 | PK | MC3 | 000 | PK | MC311 |  | PE | MC | H | P | 300 |  | 13 |  |  |  |  |  | Plan to ship Mar (tenitive) |
| PK000MC32P | Issue Formal P.O. for MC311 | 3d | 2005-11-16 A | 2006-01-13 A | PK000MC32J | 100% |  | 2005-12-06 | 2005-12-08 |  |  |  |  | 2006-07-29 | 0 | 0 | 00 | PK | MC3 | 000 | PK | MC311 |  | PE | M | K | P |  |  |  |  |  |  |  |  |  |
| PK000MB64I | Eval Bids & Issue Recmd MB640 | 15d | 2005-11-18 A | 2005-12-12 A | EK000MB64D, PK000MB64H | 100% |  | 2005-11-14 | 2005-12-02 |  |  |  |  | 2006-07-29 | 0 | 0 | 00 | PK | MB6 | 000 | PK | MB640 | 101B | CE | M | E | P | 5 |  |  |  |  |  |  |  |  |
| PK000MB71I | Eval Bids & Issue Recmd MB710 | 15d | 2005-11-18 A | 2006-01-31 A | EK000MB64D, PK000MB71H | 100% |  | 2005-11-14 | 2005-12-02 |  |  |  |  | 2006-07-29 | 0 | 0 | 00 | PK | MB7 | 000 | PK | MB710 | 2202B | CE | M | E | P | 5 |  |  |  |  |  |  |  |  |
| PK000MJ37J | Final Negotiate/Interim Award - MJ340 | 4d | 2005-11-18 A | 2006-01-13 A | PK000MJ37I, EK000EB015 | 100% |  | 2005-11-14 | 2005-11-17 |  |  |  |  | 2006-07-29 | 0 | 0 | 00 | PK | MJ3 | 000 | PK | MJ340 |  | NE | M | G | P |  |  |  |  |  |  |  |  |  |
| PK000MJ73J | Final Negotiate/Interim Award - MJ730 | 3d | 2005-11-18 A | 2005-12-12 A | PK000MJ73I, EK000EB015 | 100% |  | 2005-11-14 | 2005-11-16 |  |  |  |  | 2006-07-29 | 0 | 0 | 00 | PK | MJ7 | 000 | PK | MJ730 | 2303J | PE | M | G | P |  |  |  |  |  |  |  |  |  |
| PK000IC35H | DCS - Fabricate Hardware | 80d | 2005-11-21 A | 2006-08-31 A | PK000IC35G, PK000IC35K, PK000IC35M FF+50d, PK000IC35M | 100% |  | 2006-10-02 | 2007-01-19 |  |  |  |  | 2006-07-29 | 0 | 0 | 00 | PK | I35 | 000 | PK | I3510 |  |  | I | H | P | 135 |  | 02 | 60 | 80 | 100 |  | 03 |  |
| PK000MU30J | Final Negotiate/Interim Award - MU300 | 3d | 2005-11-25 A | 2005-11-29 A | PK000MU30I, EK000EB015 | 100% |  | 2005-11-14 | 2005-11-16 |  |  |  |  | 2006-07-29 | 0 | 0 | 00 | PK | MU3 | 000 | PK | MU300 | 2102U | FE | M | G | P | 10 | X | 09 |  |  |  |  |  |  |
| PK000MJ34P | Issue Formal P.O. for MJ304 | 3d | 2005-11-29 A | 2005-12-23 A | EK000MJ34E, PK000MJ34J, PK000MJ34X | 100% |  | 2005-12-19 | 2005-12-21 |  |  |  |  | 2006-07-29 | 0 | 0 | 00 | PK | MJ3 | 000 | PK | MJ304 | 2003J | FE | M | K | P |  |  |  |  |  |  |  |  |  |
| PK000MB42I | Eval Bids & Issue Recmd MB420 | 15d | 2005-11-30 A | 2005-12-01 A | EK000MB42D, PK000MB42H | 100% |  | 2005-11-14 | 2005-12-02 |  |  |  |  | 2006-07-29 | 0 | 0 | 00 | PK | MB4 | 000 | PK | MB420 | 101B | CE | M | E | P | 5 |  |  |  |  |  |  |  |  |
| PK000MB69J | Final Negotiate/Interim Award - MB691 | 3d | 2005-11-30 A | 2005-12-02 A | EK000MB69D, PK000MB69I, EK000EB015 | 100% |  | 2005-11-14 | 2005-11-16 |  |  |  |  | 2006-07-29 | 0 | 0 | 00 | PK | MB6 | 000 | PK | MB691 | 101B | CE | M | G | P | 10 |  |  |  |  |  |  |  |  |
| PK000MU32G | 01D MU322 Issue RFQ | 3d | 2005-11-30 A | 2005-12-12 A | EK000MU32L | 100% |  | 2006-01-30 | 2006-02-01 |  |  |  | EBWK - Global | 2006-07-29 | 0 | 0 | 00 | PK | MU3 | 000 | PK | MU322 |  | NE | M | B | P |  |  |  |  |  |  |  |  |  |
| PK010I1240 | Rotameters - Fabricate/Exworks | 80d | 2005-11-30 A | 2006-07-28 A | EK010I1241, PK000I124K, EK000YA000 FS+5d, EK010I1240 | 100% |  | 2006-11-30 | 2007-03-21 |  |  |  |  | 2006-07-29 | 0 | 0 | 00 | PK | I21 | 000 | PK | I2124 |  | IR | I | H | P |  | N |  |  |  |  |  |  |  |
| PK010I1150 | Annubars - Fabricate/Exworks | 55d | 2005-11-30 A | 2007-01-29 | EK010I1151 FS+40d, PK000I115K, EK000YA000 | 98% | 1d | 2005-11-30 | 2006-02-16 | 509d | 0d |  |  | 2006-07-29 | 0 | 0 | 00 | PK | I21 | 000 | PK | I2115 |  | IR | I | H | P |  | N |  |  |  |  |  |  |  |
| PK000MB69K | MB691 - Fabricate/PO Promise 101-B | 130d | 2005-12-05 A | 2006-08-07 A | PK000MB69J, PK000MB69P FF | 100% |  | 2005-11-14 | 2006-05-16 |  |  |  |  | 2006-07-29 | 0 | 0 | 00 | PK | MB6 | 000 | PK | MB691 | 101B | CE | MB | H | P | 130 |  |  |  |  |  |  |  |  |
| PK000MB69P | Issue Formal P.O. for MB691 | 10d | 2005-12-05 A | 2005-12-05 A | PK000MB69J | 100% |  | 2005-11-14 | 2005-11-25 |  |  |  |  | 2006-07-29 | 0 | 0 | 00 | PK | MB6 | 000 | PK | MB691 | 101B | CE | M | K | P | 3 |  |  |  |  |  |  |  |  |
| PK000MU21K | MU221 - Fabricate/PO Promise LIFT STATION | 100d | 2005-12-05 A | 2006-10-02 A | PK000MU21J, PK000MU21P FF, PK01EMUV03 FF | 100% |  | 2005-11-14 | 2006-04-04 |  |  |  |  | 2006-07-29 | 0 | 0 | 00 | PK | MU2 | 01E | PK | MU221 | 2402L | NE | MU | H | P | 100 |  | 13 |  |  |  |  |  |  |
| PK000MU21P | Issue Formal P.O. for MU221 | 3d | 2005-12-05 A | 2006-01-11 A | EK000MU21E, PK000MU21J | 100% |  | 2005-11-18 | 2005-11-23 |  |  |  |  | 2006-07-29 | 0 | 0 | 00 | PK | MU2 | 01E | PK | MU221 | 2402L | NE | M | K | P |  |  |  |  |  |  |  |  |  |
| PK000MU22K | MU222 - Fabricate/PO Promise 2401-U | 100d | 2005-12-05 A | 2006-10-02 A | PK000MU22J, PK000MU22P FF | 100% |  | 2005-11-14 | 2006-04-04 |  |  |  |  | 2006-07-29 | 0 | 0 | 00 | PK | MU2 | 000 | PK | MU222 | 2401U | NE | MU | H | P | 100 |  | 13 |  |  |  |  |  |  |
| PK000MU22P | Issue Formal P.O. for MU222 | 3d | 2005-12-05 A | 2006-01-11 A | EK000MU22E, PK000MU22J | 100% |  | 2005-11-18 | 2005-11-23 |  |  |  |  | 2006-07-29 | 0 | 0 | 00 | PK | MU2 | 000 | PK | MU222 | 2401U | NE | M | K | P |  |  |  |  |  |  |  |  |  |
| PK000PR20F | PR201 KAAP Catalyst - Final Negotiate/Interim Award | 3d | 2005-12-05 A | 2006-01-09 A | EK020PR20D, PK000PR20E | 100% |  | 2006-02-02 | 2006-02-07 |  |  |  |  | 2006-07-29 | 0 | 0 | 00 | PK | MB2 | 000 | PK | PR201 |  | CE | M | G | P | 10 |  |  |  |  |  |  |  |  |
| PK000MB21I | Eval Bids & Issue Recmd MB212 | 15d | 2005-12-05 A | 2005-12-07 A | EK000MB21D, PK000MB21H | 100% |  | 2005-12-05 | 2005-12-23 |  |  |  |  | 2006-07-29 | 0 | 0 | 00 | PK | MB2 | 000 | PK | MB212 | 101B | CE | M | E | P | 5 |  |  |  |  |  |  |  |  |
| PK000MJ32P | Issue Formal P.O. for MJ302 | 10d | 2005-12-05 A | 2005-12-28 A | PK000MJ32J, EK000MJ32E FF+2d | 100% |  | 2005-12-05 | 2005-12-16 |  |  |  |  | 2006-07-29 | 0 | 0 | 00 | PK | MJ3 | 000 | PK | MJ302 | 107JA | FE | M | K | P |  | X |  |  |  |  |  |  |  |
| PK000MB21J | Final Negotiate/Interim Award - MB212 | 3d | 2005-12-07 A | 2005-12-08 A | EK000MB21D, PK000MB21I | 100% |  | 2006-02-01 | 2006-02-06 |  |  |  |  | 2006-07-29 | 0 | 0 | 00 | PK | MB2 | 000 | PK | MB212 | 101B | CE | M | G | P | 10 |  |  |  |  |  |  |  |  |
| PK000MB21K | MB212 - Fabricate/PO Promise Equip. 101-B Siding | 60d | 2005-12-08 A | 2006-04-03 A | PK000MB21J, PK000MB21P FF | 100% |  | 2006-02-06 | 2006-04-28 |  |  |  |  | 2006-07-29 | 0 | 0 | 00 | PK | MB2 | 000 | PK | MB212 | 101B | CE | MB | H | P | 60 |  |  |  |  |  |  |  |  |
| PK000MB21P | Issue Formal P.O. for MB212 | 3d | 2005-12-08 A | 2005-12-22 A | PK000MB21J | 100% |  | 2006-02-06 | 2006-02-08 |  |  |  |  | 2006-07-29 | 0 | 0 | 00 | PK | MB2 | 000 | PK | MB212 | 101B | CE | M | K | P | 3 |  |  |  |  |  |  |  |  |

| ID | Activity | Duration | Start | Finish | Predecessors | Complete | Remaining | Planned start | Planned finish | Total float | Free float | Expected finish | Calendar | zData Date | PCA Criticality Index | PCA Duration Sensitivity | user_integer2 | EB02 - UNIT | EB01 - RESP | EB06 - WORK OP | EB03 - AREA | EB05 - DISCIPLINE | EB07 - REQN | EB08 - TAG | EB10 - KEY | EB04 - CLASS | EB09 - IPMS | EB00 - EPC | EB11 - FLAG | EB14 - RISK | EB22 - Critical Actvities | Optimistic Duration | Most Likely Duration | Pessimistic Duration | EB21 - Rev 2 Risk Associations | user_text1 | user_integer1 |
| --- | --- | --- | --- | --- | --- | --- | --- | --- | --- | --- | --- | --- | --- | --- | --- | --- | --- | --- | --- | --- | --- | --- | --- | --- | --- | --- | --- | --- | --- | --- | --- | --- | --- | --- | --- | --- | --- |
| PK000MB42K | MB420 - Fabricate/PO Promise 101-B Cast Peep Sites | 60d | 2005-12-08 A | 2006-03-01 A | PK000MB42J, PK000MB42P FF | 100% |  | 2006-02-27 | 2006-05-19 |  |  |  |  | 2006-07-29 | 0 | 0 | 60 | 00 | PK | MB4 | 000 | PK | MB420 | 101B | CE | MB | H | P |  |  |  |  |  |  |  |  |  |
| PK000MB42P | Issue Formal P.O. for MB420 | 10d | 2005-12-09 A | 2005-12-22 A | PK000MB42J | 100% |  | 2006-01-03 | 2006-01-16 |  |  |  |  | 2006-07-29 | 0 | 0 | 3 | 00 | PK | MB4 | 000 | PK | MB420 | 101B | CE | M | K | P |  |  |  |  |  |  |  |  |  |
| PK000MB64J | Final Negotiate/Interim Award - MB640 | 3d | 2005-12-12 A | 2006-02-06 A | EK000MB64D, PK000MB64I | 100% |  | 2005-12-19 | 2005-12-21 |  |  |  |  | 2006-07-29 | 0 | 0 | 10 | 00 | PK | MB6 | 000 | PK | MB640 | 101B | CE | M | G | P |  |  |  |  |  |  |  |  |  |
| PK000MJ73P | Issue Formal P.O. for MJ730 | 10d | 2005-12-12 A | 2005-12-12 A | EK000MJ73E FF, PK000MJ73J | 100% |  | 2005-12-08 | 2005-12-21 |  |  |  |  | 2006-07-29 | 0 | 0 |  | 00 | PK | MJ7 | 000 | PK | MJ730 | 2303J | PE | M | K | P |  |  |  |  |  |  |  |  |  |
| PK000MU32H | 01D MU322 Receive Quotes | 15d | 2005-12-12 A | 2006-01-23 A | PK000MU32G | 100% |  | 2006-02-02 | 2006-02-22 |  |  |  | EBWK - Global | 2006-07-29 | 0 | 0 |  | 00 | PK | MU3 | 000 | PK | MU322 |  | NE | M | C | P |  |  |  |  |  |  |  |  |  |
| PK000IC351 | DCS - Vendor Provides Software & Workstations | 20d | 2005-12-15 A | 2005-12-30 A | PK000IC35K | 100% |  | 2005-12-19 | 2006-01-17 |  |  |  |  | 2006-07-29 | 0 | 0 |  | 00 | PK | I35 | 000 | IC | I3510 |  |  | I |  | E |  |  |  |  |  |  |  |  |  |
| PK000MU30K | MU300 - Fabricate/PO Promise 2102-U | 140d | 2005-12-20 A | 2006-11-29 A | PK000MU30J, PK000MU30P FF | 100% |  | 2006-01-03 | 2006-07-17 |  |  |  |  | 2006-07-29 | 0 | 0 | 140 | 00 | PK | MU3 | 000 | PK | MU300 | 2102U | FE | MU | H | P | X | 09 |  |  |  |  |  |  |  |
| PK000MU30P | Issue Formal P.O. for MU300 | 3d | 2005-12-20 A | 2006-02-16 A | EK000MU30E, PK000MU30J | 100% |  | 2006-02-06 | 2006-02-08 |  |  |  |  | 2006-07-29 | 0 | 0 | 3 | 00 | PK | MU3 | 000 | PK | MU300 | 2102U | FE | M | K | P |  | 09 |  |  |  |  |  |  |  |
| PK000MB65J | Final Negotiate/Interim Award - MB622 | 3d | 2005-12-21 A | 2006-02-06 A | EK000MB65D, PK000MB65I | 100% |  | 2006-02-01 | 2006-02-06 |  |  |  |  | 2006-07-29 | 0 | 0 | 10 | 00 | PK | MB6 | 000 | PK | MB622 | 101B | CE | M | G | P |  |  |  |  |  |  |  |  |  |
| PK000MJ31K | MJ301 - Fabricate/ PO Promise 104-J | 280d | 2005-12-21 A | 2007-03-02 | PK000MJ31J, PK000MJ31P FF | 91% | 25d | 2005-12-19 | 2007-01-16 | 168d | 0d | 2007-03-02 |  | 2006-07-29 | 0 | 0 | 280 | 00 | PK | MJ3 | 000 | PK | MJ301 | 104J | FE | MJ | H | P | X | 13 |  |  |  |  |  |  |  |
| PK000MJ31P | Issue Formal P.O. for MJ301 | 10d | 2005-12-21 A | 2005-12-28 A | PK000MJ31J, EK000MJ31E FF+2d | 100% |  | 2005-12-19 | 2006-01-03 |  |  |  |  | 2006-07-29 | 0 | 0 |  | 00 | PK | MJ3 | 000 | PK | MJ301 | 104J | FE | M | K | P | X |  |  |  |  |  |  |  |  |
| PK000MJ32K | MJ302 - Fabricate/PO Promise 107-JA/JB/JC | 280d | 2005-12-21 A | 2007-02-16 | PK000MJ32J, PK000MJ32P FF | 95% | 15d | 2005-12-19 | 2007-01-16 | 175d | 0d | 2007-02-16 |  | 2006-07-29 | 0 | 0 | 280 | 00 | PK | MJ3 | 000 | PK | MJ302 | 107JA | FE | MJ | H | P | X | 13 |  |  |  |  |  |  |  |
| PK000MU11G | 05B MU311 Issue RFQ | 3d | 2005-12-21 A | 2005-12-27 A | EK000MU11L | 100% |  | 2006-01-30 | 2006-02-01 |  |  |  | EBWK - Global | 2006-07-29 | 0 | 0 |  | 00 | PK | MU3 | 000 | PK | MU311 |  | NE | M | B | P |  |  |  |  |  |  |  |  |  |
| PK000ML50Y | Requote - ML500 | 20d | 2005-12-27 A | 2006-01-10 A | PK000ML50M | 100% |  | 2005-05-27 | 2005-06-24 |  |  |  |  | 2006-07-29 | 0 | 0 |  | 00 | PK | ML5 | 000 | PK | ML500 | 2003L | FE | M | G | P | X |  |  |  |  |  |  |  |  |
| PK000MU11H | 05B MU311 Receive Quotes | 15d | 2005-12-27 A | 2006-02-03 A | PK000MU11G | 100% |  | 2006-02-02 | 2006-02-22 |  |  |  | EBWK - Global | 2006-07-29 | 0 | 0 |  | 00 | PK | MU3 | 000 | PK | MU311 |  | NE | M | C | P |  |  |  |  |  |  |  |  |  |
| PK000MU29G | Issue MU292 RFQ | 3d | 2005-12-27 A | 2006-01-05 A | EK000MU29F | 100% |  | 2006-01-03 | 2006-01-05 |  |  |  |  | 2006-07-29 | 0 | 0 |  | 00 | PK | MU2 | 000 | PK | MU292 | 2404L | NE | M | B | P | Y |  |  |  |  |  |  |  |  |
| PK000MD104 | MD305 Merc. Removal Bed - Issue RFQ | 3d | 2006-01-05 A | 2006-01-09 A | EK000MD102 | 100% |  | 2006-01-03 | 2006-01-05 |  |  |  |  | 2006-07-29 | 0 | 0 |  | 00 | PK | MD3 | 000 | PK | MD305 |  | FE | M | B | P | X |  |  |  |  |  |  |  |  |
| PK000MU29H | Receive Quotes MU292 | 15d | 2006-01-05 A | 2006-02-20 A | PK000MU29G | 100% |  | 2006-01-03 | 2006-01-23 |  |  |  |  | 2006-07-29 | 0 | 0 |  | 00 | PK | MU2 | 000 | PK | MU292 | 2404L | NE | M | C | P | Y |  |  |  |  |  |  |  |  |
| PK000MJ37B | Eval Bids & Issue Recmd MJ307 | 5d | 2006-01-06 A | 2006-01-20 A | PK000MJ37E | 100% |  | 2006-01-16 | 2006-01-20 |  |  |  |  | 2006-07-29 | 0 | 0 |  | 00 | PK | MJ3 | 000 | PK | MJ307 | 2100JA | CE | M | E | P | X |  |  |  |  |  |  |  |  |
| PK000ML52G | Issue ML501 RFQ | 3d | 2006-01-09 A | 2006-01-31 A | EK000ML50C | 100% |  | 2006-03-28 | 2006-03-30 |  |  |  |  | 2006-07-29 | 0 | 0 |  | 00 | PK | ML5 | 000 | PK | ML501 |  | FE | ML | B | P | Y |  |  |  |  |  |  |  |  |
| PK000PR20G | PR201 KAAP Catalyst - Issue Formal P.O. | 10d | 2006-01-09 A | 2006-01-09 A | PK000PR20F | 100% |  | 2006-02-06 | 2006-02-20 |  |  |  |  | 2006-07-29 | 0 | 0 | 3 | 00 | PK | MB2 | 000 | PK | PR201 |  | CE | M | K | P |  |  |  |  |  |  |  |  |  |
| PK000ML90G | Issue ML900 RFQ | 3d | 2006-01-10 A | 2006-01-16 A | EK000ML50C | 100% |  | 2005-03-29 | 2005-03-31 |  |  |  |  | 2006-07-29 | 0 | 0 |  | 00 | PK | ML9 | 000 | PK | ML900 |  | FE | M | B | P | Y |  |  |  |  |  |  |  |  |
| PK000PR20H | PR201 KAAP Catalyst - Fabricate/Exworks | 352d | 2006-01-10 A | 2007-12-03 | PK000PR20F, PK000PR20G FF | 37% | 221d | 2006-02-06 | 2007-06-12 | 26d | 0d | 2007-12-03 |  | 2006-07-29 | 0 | 0 | 60 | 00 | PK | MB2 | 000 | PK | PR201 |  | CE | MB | H | P |  |  | C4 |  |  |  |  |  |  |
| PK000MD106 | MD305 Merc. Removal Bed - Receive Quotes | 15d | 2006-01-11 A | 2006-02-10 A | PK000MD104 | 100% |  | 2006-01-03 | 2006-01-23 |  |  |  |  | 2006-07-29 | 0 | 0 |  | 00 | PK | MD3 | 000 | PK | MD305 |  | FE | M | C | P | X |  |  |  |  |  |  |  |  |
| PK000MJ37K | MJ340 - Fabricate/PO Promise METERING PUMPS | 140d | 2006-01-13 A | 2006-08-01 A | PK000MJ37J, PK000MJ37P FF, EK000MJ37E FF, EK000YA000 FF | 100% |  | 2006-02-27 | 2006-09-08 |  |  |  |  | 2006-07-29 | 0 | 0 | 140 | 00 | PK | MJ3 | 000 | PK | MJ340 |  | NE | MJ | H | P |  | 13 |  |  |  |  |  |  |  |
| PK000MJ37P | Issue Formal P.O. for MJ340 | 10d | 2006-01-13 A | 2006-02-20 A | PK000MJ37J, EK000YA000 FF | 100% |  | 2006-01-30 | 2006-02-13 |  |  |  |  | 2006-07-29 | 0 | 0 |  | 00 | PK | MJ3 | 000 | PK | MJ340 |  | NE | M | K | P |  |  |  |  |  |  |  |  |  |
| PK000I354E | ITCC - Eval Bids/Issue Recmd | 5d | 2006-01-16 A | 2006-01-27 A | EK000I354D FS+3d, PK000I354C | 100% |  | 2006-01-06 | 2006-01-12 |  |  |  |  | 2006-07-29 | 0 | 0 |  | 00 | PK | I35 | 000 | IC | I3542 |  |  | I | E | P | X |  |  |  |  |  |  |  |  |
| PK000ML90H | Receive Quotes ML900 | 15d | 2006-01-16 A | 2006-02-20 A | PK000ML90G | 100% |  | 2005-04-01 | 2005-04-21 |  |  |  |  | 2006-07-29 | 0 | 0 |  | 00 | PK | ML9 | 000 | PK | ML900 |  | FE | M | C | P | X |  |  |  |  |  |  |  |  |
| PK000I444E | Eval Bids / Issue Recmd - Analyzer Shelter | 5d | 2006-01-16 A | 2006-01-20 A | EK000I444D | 100% |  |  |  |  |  |  |  | 2006-07-29 | 0 | 0 |  | 00 | PK | I44 | 000 | PK | I4440 |  |  | I | E | P |  |  |  |  |  |  |  |  |  |
| PK000MJ33I | Eval Bids & Issue Recmd MJ303 | 5d | 2006-01-19 A | 2006-01-24 A | EK000MJ33D | 100% |  | 2006-01-23 | 2006-01-27 |  |  |  |  | 2006-07-29 | 0 | 0 |  | 00 | PK | MJ3 | 000 | PK | MJ303 | 2202JA | FE | M | E | P |  |  |  |  |  |  |  |  |  |
| PK000I352G | SIS - Interim Award | 5d | 2006-01-20 A | 2006-02-20 A | PK000I352E, EK000IC36D | 100% |  | 2006-01-30 | 2006-02-06 |  |  |  |  | 2006-07-29 | 0 | 0 |  | 00 | PK | I35 | 000 | IC | I3520 |  |  | I | G | P | X |  |  |  |  |  |  |  |  |
| PK000I354G | ITCC - Interim Award | 5d | 2006-01-20 A | 2006-02-20 A | PK000I354E, EK000EB015, EK000IC36D, EK000YA000 FF | 100% |  | 2006-01-30 | 2006-02-06 |  |  |  |  | 2006-07-29 | 0 | 0 |  | 00 | PK | I35 | 000 | IC | I3542 |  |  | I | G | P | X |  |  |  |  |  |  |  |  |
| PK000MC31J | Final Negotiate/Interim Award - MC310 | 10d | 2006-01-20 A | 2006-02-03 A | PK000MC31I, EK000MC31P | 100% |  | 2006-02-06 | 2006-02-17 |  |  |  |  | 2006-07-29 | 0 | 0 |  | 00 | PK | MC3 | 000 | PK | MC310 |  | PE | M | G | P | X |  |  |  |  |  |  |  |  |
| PK000MJ37M | Final Negotiate/Interim Award - MJ307 | 10d | 2006-01-20 A | 2006-02-20 A | EK000EB015, PK000MJ37B | 100% |  | 2006-01-23 | 2006-02-03 |  |  |  |  | 2006-07-29 | 0 | 0 |  | 00 | PK | MJ3 | 000 | PK | MJ307 | 2100JA | CE | M | G | P |  |  |  |  |  |  |  |  |  |
| PK000MJ39I | Eval Bids & Issue Recmd MJ391/MJ392 | 5d | 2006-01-20 A | 2006-04-14 A | EK000MJ39D | 100% |  | 2006-01-16 | 2006-01-20 |  |  |  |  | 2006-07-29 | 0 | 1.8 |  | 00 | PK | MJ3 | 000 | PK | MJ391 |  | PE | MJ | E | P | X |  |  | 3 | 4 | 6 | 03 |  |  |
| PK000MU32I | 01D MU322 Eval Bids & Issue Recmd | 5d | 2006-01-23 A | 2006-05-01 A | EK000MU32D SS | 100% |  | 2006-03-06 | 2006-03-10 |  |  |  | EBWK - Global | 2006-07-29 | 5.6 | 0 |  | 00 | PK | MU3 | 000 | PK | MU322 |  | NE | MU | E | P |  |  |  | 12 | 15 | 24 | 03 |  |  |
| PK000MJ33J | Final Negotiate/Interim Award - MJ303 | 3d | 2006-01-24 A | 2006-02-03 A | PK000MJ33I, EK000EB015 | 100% |  | 2006-02-09 | 2006-02-13 |  |  |  |  | 2006-07-29 | 0 | 0 |  | 00 | PK | MJ3 | 000 | PK | MJ303 | 2202JA | FE | M | G | P |  |  |  |  |  |  |  |  |  |
| PK000MJ73K | MJ730 - Fabricate/PO Promise EMERG PWR GENERATOR | 140d | 2006-01-24 A | 2007-03-30 | PK000MJ73J, PK000MJ73P FF | 68% | 45d | 2005-12-06 | 2006-06-21 | 70d | 0d | 2007-03-30 |  | 2006-07-29 | 0 | 0 | 140 | 00 | PK | MJ7 | 000 | PK | MJ730 | 2303J | PE | MJ | H | P |  | 13 |  |  |  |  |  |  |  |
| PK000I444G | Final Negotiation / Interim Award - Shelters/ Analyzers | 10d | 2006-01-27 A | 2006-03-20 A | PK000I444E, EK000EB015, EK000YA000 FF+5d | 100% |  | 2006-01-27 | 2006-02-10 |  |  |  |  | 2006-07-29 | 0 | 0 |  | 00 | PK | I44 | 000 | PK | I4440 |  |  | I | G | P |  |  |  | 10 | 15 | 20 | 03 |  |  |
| PK000MU25G | 02G MU225 Issue RFQ | 3d | 2006-01-30 A | 2006-01-31 A | EK000MU25L | 100% |  | 2006-02-27 | 2006-03-01 |  |  |  | EBWK - Global | 2006-07-29 | 0 | 0 |  | 00 | PK | MU2 | 000 | PK | MU225 |  | NE | M | B | P |  |  |  |  |  |  |  |  |  |
| PK000E002B | Transformer - Inquiry REQ/RFQ | 20d | 2006-01-30 A | 2006-02-16 A | EK000E002A | 100% |  | 2006-01-30 | 2006-02-24 |  |  |  |  | 2006-07-29 | 0 | 0 |  | 00 | PK | EF5 | 000 | PK | E0002 |  |  | E | B | P |  |  |  |  |  |  |  |  |  |
| PK000E001B | Sub Stations - Inquiry REQ/RFQ | 20d | 2006-01-31 A | 2006-01-31 A | EK000E001A | 100% |  | 2006-01-30 | 2006-02-24 |  |  |  |  | 2006-07-29 | 0 | 0 |  | 00 | PK | EF1 | 000 | PK | E0001 |  |  | E | B | P |  |  |  |  |  |  |  |  |  |
| PK000E001C | Sub Stations - Receive Bids | 10d | 2006-01-31 A | 2006-03-22 A | PK000E001B | 100% |  | 2006-02-27 | 2006-03-10 |  |  |  |  | 2006-07-29 | 0 | 0 |  | 00 | PK | EF1 | 000 | PK | E0001 |  |  | E | C | P |  |  |  | 2 | 3 | 6 | 03 |  |  |
| PK000MB71J | Final Negotiate/Interim Award - MB710 | 3d | 2006-01-31 A | 2006-02-06 A | EK000MB64D, PK000MB71I | 100% |  | 2005-12-19 | 2005-12-21 |  |  |  |  | 2006-07-29 | 0 | 0 | 10 | 00 | PK | MB7 | 000 | PK | MB710 | 2202B | CE | M | G | P |  |  |  |  |  |  |  |  |  |
| PK000MU25H | 02G MU225 Receive Quotes | 15d | 2006-01-31 A | 2006-02-28 A | PK000MU25G | 100% |  | 2006-02-27 | 2006-03-17 |  |  |  | EBWK - Global | 2006-07-29 | 0 | 0 |  | 00 | PK | MU2 | 000 | PK | MU225 |  | NE | MU | C | P |  |  |  |  |  |  | 03 |  |  |
| PK000MC31K | MC310 - Fabricate/PO Promise 101-C & 102-C (Heavy Lift) | 320d | 2006-02-03 A | 2007-07-30 | PK000MC31J FF, PK000MC31P FF, EK000MC31E SS | 59% | 131d | 2006-02-20 | 2007-05-11 | 8d | 0d | 2007-07-30 |  | 2006-07-29 | 4.7 | 6.9 | 230 | 00 | PK | MC3 | 000 | PK | MC310 | 101C | PE | MC | H | P | HD | 13 |  | 280 | 301 | 320 |  | L&T order, delays due to flooding. |  |
| PK000MC31P | Issue Formal P.O. for MC310 | 3d | 2006-02-03 A | 2006-03-22 A | PK000MC31J | 100% |  | 2006-03-06 | 2006-03-08 |  |  |  |  | 2006-07-29 | 0 | 3.1 |  | 00 | PK | MC3 | 000 | PK | MC310 |  | PE | MC | K | P | CD |  |  | 3 | 5 | 10 | 03 |  | 3 |
| PK000MJ33K | MJ303 - Fabricate/PO Promise CW PUMPS | 260d | 2006-02-03 A | 2007-03-30 | PK000MJ33J, PK000MJ33P FF | 83% | 45d | 2006-01-30 | 2007-01-26 | 27d | 0d | 2007-03-30 |  | 2006-07-29 | 0 | 0 | 260 | 00 | PK | MJ3 | 000 | PK | MJ303 | 2202JA | FE | MJ | H | P |  | 13 |  |  |  |  |  |  |  |
| PK000MJ33P | Issue Formal P.O. for MJ303 | 10d | 2006-02-03 A | 2006-03-06 A | EK000MJ33E, PK000MJ33J | 100% |  | 2006-01-30 | 2006-02-10 |  |  |  |  | 2006-07-29 | 0 | 0 |  | 00 | PK | MJ3 | 000 | PK | MJ303 | 2202JA | FE | MJ | K | P |  |  |  |  |  |  | 03 |  |  |
| PK000ML90I | Eval Bids & Issue Recmd ML900 | 5d | 2006-02-03 A | 2006-05-01 A | EK000ML50D | 100% |  | 2006-04-21 | 2006-04-27 |  |  |  |  | 2006-07-29 | 0 | 0 |  | 00 | PK | ML9 | 000 | PK | ML900 |  | FE | ML | E | P | X |  |  | 12 | 15 | 24 | 03 |  |  |
| PK000MB64K | MB640 - Fabricate/PO Promise 101-B Springs & Hangers | 130d | 2006-02-06 A | 2006-08-07 A | PK000MB64J, PK000MB64P FF | 100% |  | 2006-01-30 | 2006-07-28 |  |  |  |  | 2006-07-29 | 0 | 0 | 130 | 00 | PK | MB6 | 000 | PK | MB640 | 101B | CE | MB | H | P |  |  |  |  |  |  |  |  |  |
| PK000MB64P | Issue Formal P.O. for MB640 | 3d | 2006-02-06 A | 2006-02-20 A | PK000MB64J | 100% |  | 2006-01-30 | 2006-02-01 |  |  |  |  | 2006-07-29 | 0 | 0 | 3 | 00 | PK | MB6 | 000 | PK | MB640 | 101B | CE | M | K | P |  |  |  |  |  |  |  |  |  |
| PK000MB71K | MB710 - Fabricate/PO Promise 2202-B/BL Storage Flare & Flame FRT Gen. | 130d | 2006-02-06 A | 2006-11-24 A | PK000MB71J, PK000MB71P FF | 100% |  | 2006-01-30 | 2006-07-28 |  |  |  |  | 2006-07-29 | 0 | 0 | 130 | 00 | PK | MB7 | 000 | PK | MB710 | 2202B | CE | MB | H | P |  |  |  | 97 | 117 | 127 | 03 |  |  |
| PK000MB71P | Issue Formal P.O. for MB710 | 3d | 2006-02-06 A | 2006-02-20 A | PK000MB71J | 100% |  | 2006-01-30 | 2006-02-01 |  |  |  |  | 2006-07-29 | 0 | 0 | 3 | 00 | PK | MB7 | 000 | PK | MB710 | 2202B | CE | M | K | P |  |  |  |  |  |  |  |  |  |
| PK000ML52I | Eval Bids & Issue Recmd ML501 | 5d | 2006-02-06 A | 2006-03-03 A | EK000ML50D | 100% |  | 2006-02-27 | 2006-03-03 |  |  |  |  | 2006-07-29 | 0 | 0 |  | 00 | PK | ML5 | 000 | PK | ML501 |  | FE | ML | E | P | X |  |  |  |  |  | 03 |  |  |
| PK000MB65K | MB622 - Fab/PO Promise 101-B Penthouse Circ Fans | 140d | 2006-02-06 A | 2006-06-07 A | PK000MB65J, PK000MB65P FF | 100% |  | 2006-02-06 | 2006-08-18 |  |  |  |  | 2006-07-29 | 0 | 0 | 140 | 00 | PK | MB6 | 000 | PK | MB622 | 101B | CE | MB | H | P |  |  |  | 50 | 57 | 70 | 03 |  |  |
| PK000MB65P | Issue Formal P.O. for MB622 | 3d | 2006-02-06 A | 2006-02-20 A | PK000MB65J | 100% |  | 2006-02-06 | 2006-02-08 |  |  |  |  | 2006-07-29 | 0 | 0 | 3 | 00 | PK | MB6 | 000 | PK | MB622 | 101B | CE | M | K | P |  |  |  |  |  |  |  |  |  |
| PK000MU31J | Final Negotiate/Interim Award - MU310 | 10d | 2006-02-06 A | 2006-02-14 A | PK000MU31I, EK000EB015, EK000YA000 FF+5d | 100% |  | 2006-02-06 | 2006-02-20 |  |  |  |  | 2006-07-29 | 0 | 0 |  | 00 | PK | MU3 | 000 | PK | MU310 |  | NE | MU | G | P |  |  |  |  |  |  | 03 |  |  |
| PK000MJ38F | Issue MJ308 RFQ | 3d | 2006-02-13 A | 2006-02-17 A | PK000MJ38Q | 100% |  | 2006-01-03 | 2006-01-05 |  |  |  |  | 2006-07-29 | 0 | 0 |  | 00 | PK | MJ3 | 000 | PK | MJ308 | 2100JA | CE | M | B | P | X |  |  |  |  |  |  |  |  |
| PK000MU31K | MU310 - Fabricate/PO Promise Injection System & Chlorination Unit | 80d | 2006-02-14 A | 2007-01-26 A | PK000MU31J, PK000MU31P FF | 100% |  | 2006-03-28 | 2006-07-17 |  |  |  |  | 2006-07-29 | 0 | 3.6 |  | 00 | PK | MU3 | 000 | PK | MU310 |  | NE | MU | H | P | CD |  |  | 50 | 60 | 80 | 03 |  | 80 |
| PK000MU31P | Issue Formal P.O. for MU310 | 3d | 2006-02-14 A | 2006-02-14 A | PK000MU31J | 100% |  | 2006-03-23 | 2006-03-27 |  |  |  |  | 2006-07-29 | 0 | 2.6 |  | 00 | PK | MU3 | 000 | PK | MU310 |  | NE | MU | K | P |  |  |  | 2 | 3 | 8 | 03 |  |  |
| PK000E002C | Transformer - Receive Bids | 10d | 2006-02-16 A | 2006-04-04 A | PK000E002B | 100% |  | 2006-02-27 | 2006-03-10 |  |  |  |  | 2006-07-29 | 0 | 2.9 |  | 00 | PK | EF5 | 000 | PK | E0002 |  |  | E | C | P | CD |  |  | 7 | 10 | 17 | 03 |  | 3 |
| PK000ML50J | Final Negotiate/Interim Award - ML500 | 10d | 2006-02-16 A | 2006-03-03 A | PK000ML50M, EK000EB015, EK000ML50Z, EK000YA000 FF+5d | 100% |  | 2006-02-27 | 2006-03-10 |  |  |  |  | 2006-07-29 | 0 | 0 |  | 00 | PK | ML5 | 000 | PK | ML500 | 2003L | FE | ML | G | P | X |  |  |  |  |  | 03 |  |  |
| PK000ML52J | Final Negotiate/Interim Award - ML501 | 10d | 2006-02-16 A | 2006-03-03 A | PK000ML50M, EK000EB015, EK000ML50Z, EK000YA000 FF+5d, PK000ML52I, PK000ML52G | 100% |  | 2006-03-31 | 2006-04-13 |  |  |  |  | 2006-07-29 | 0 | 0 |  | 00 | PK | ML5 | 000 | PK | ML501 |  | FE | ML | G | P | X |  |  |  |  |  |  |  |  |
| PK000I352K | SIS - Formal Award | 10d | 2006-02-20 A | 2006-03-13 A | PK000I352G, EK000EB015, EK000YA000 FF+5d | 100% |  | 2006-06-12 | 2006-06-23 |  |  |  |  | 2006-07-29 | 0 | 0 |  | 00 | PK | I35 | 000 | IC | I3520 |  |  | I | K | P |  |  |  |  |  |  | 03 |  |  |
| PK000I354K | ITCC - Formal Award | 5d | 2006-02-20 A | 2006-03-13 A | PK000I354G, EK000EB015, EK000YA000 FF+5d | 100% |  | 2006-04-17 | 2006-04-21 |  |  |  |  | 2006-07-29 | 0 | 0 |  | 00 | PK | I35 | 000 | IC | I3542 |  |  | I | K | P |  |  |  |  |  |  |  |  |  |
| PK000MB66J | Final Negotiate/Interim Award - MB660 | 3d | 2006-02-20 A | 2006-02-24 A | EK000MB66D, PK000MB66I, EK000YA000 FF+5d | 100% |  | 2006-03-13 | 2006-03-15 |  |  |  |  | 2006-07-29 | 0 | 0 | 10 | 00 | PK | MB6 | 000 | PK | MB660 | 101B | CE | MB | G | P |  |  |  |  |  |  |  |  |  |
| PK000MJ37R | Issue Formal P.O. for MJ307 | 10d | 2006-02-20 A | 2006-03-03 A | PK000MJ37M, EK000YA000 FF+5d | 100% |  | 2006-02-27 | 2006-03-10 |  |  |  |  | 2006-07-29 | 0 | 0 |  | 00 | PK | MJ3 | 000 | PK | MJ307 | 2100JA | CE | MJ | K | P |  |  |  |  |  |  | 03 |  |  |
| PK000MJ37U | MJ307 - Fabricate/PO Promise ISBL ANSI/API PUMPS | 200d | 2006-02-20 A | 2007-02-19 | PK000MJ37M, PK000MJ37R FF, EK000MJ37C FF | 92% | 16d | 2006-02-27 | 2006-12-01 | 192d | 0d | 2007-02-19 |  | 2006-07-29 | 0 | 0.8 | 200 | 00 | PK | MJ3 | 000 | PK | MJ307 | 2100JA | CE | MJ | H | P | CD | 13 |  | 150 | 160 | 180 | 03 |  | 200 |
| PK000MJ38D | Receive Quotes MJ308 | 15d | 2006-02-20 A | 2006-03-13 A | PK000MJ38F | 100% |  | 2006-03-20 | 2006-04-07 |  |  |  |  | 2006-07-29 | 8.3 | 0 |  | 00 | PK | MJ3 | 000 | PK | MJ308 | 2100JA | CE | MJ | C | P | X |  |  | 5 | 6 | 10 | 03 |  |  |

Notes:
- PK000MD104: P3 Activity Log Info: 103-E, 104-E, 105-E, 150-E
- PK000MJ37B: P3 Activity Log Info: Using ISSP (Goulds) / Not Required

| ID | Activity | Duration | Start | Finish | Predecessors | Complete | Remaining | Planned start | Planned finish | Total float | Free float | Expected finish | Calendar | zData Date | PCA Criticality Index | PCA Duration Sensitivity | user_integer2 | EB02 - UNIT | EB01 - RESP | EB06 - WORK OP | EB03 - AREA | EB05 - DISCIPLINE | EB07 - REQN | EB08 - TAG | EB10 - KEY | EB04 - CLASS | EB09 - IPMS | EB00 - EPC | EB21 - Rev 2 Risk Associations | EB11 - FLAG | EB18 - Grouping | Optimistic Duration | Most Likely Duration | Pessimistic Duration | zComments | EB14 - RISK | user_integer1 |
| --- | --- | --- | --- | --- | --- | --- | --- | --- | --- | --- | --- | --- | --- | --- | --- | --- | --- | --- | --- | --- | --- | --- | --- | --- | --- | --- | --- | --- | --- | --- | --- | --- | --- | --- | --- | --- | --- |
| PK000MB66K | MB660 - Fabricate/PO Promise 101-B Dampers & Air Doors | 130d | 2006-02-24 A | 2006-09-28 A | PK000MB66J, PK000MB66P FF | 100% |  | 2006-03-16 | 2006-09-13 |  |  |  |  | 2006-07-29 | 0 | 0 | 130 | 00 | PK | MB6 | 000 | PK | MB660 | 101B | CE | MB | H | P |  |  |  |  |  |  |  |  |  |
| PK000MB66P | Issue Formal P.O. for MB660 | 3d | 2006-02-24 A | 2006-02-24 A | PK000MB66J | 100% |  | 2006-03-16 | 2006-03-20 |  |  |  |  | 2006-07-29 | 0 | 0 | 3 | 00 | PK | MB6 | 000 | PK | MB660 | 101B | CE | MB | K | P |  |  |  |  |  |  |  |  |  |
| PK000MU11I | 05B MU311 Eval Bids & Issue Recmd | 5d | 2006-02-24 A | 2006-03-03 A | EK000MU11D SS | 100% |  | 2006-03-06 | 2006-03-10 |  |  |  | EBWK - Global | 2006-07-29 | 0 | 0 |  | 00 | PK | MU3 | 000 | PK | MU311 |  | NE | MU | E | P | 03 |  |  |  |  |  |  |  |  |
| PK000PS00A | 000 SP Items - Issue RFQ | 5d | 2006-02-24 A | 2006-03-01 A | EK010SY185, EK020SY156, EK030SY185, EK050SY185, EK020SY147 FS+5d, EK020SY050 S1, EK020SY145 | 100% |  | 2006-03-27 | 2006-03-31 |  |  |  |  | 2006-07-29 | 0 | 0 |  | 00 | PK | P90 | 000 | PK | PS000 |  | IR | P | B | P |  |  |  |  |  |  |  |  |  |
| PK000I1220 | Coriolis Meters - Fabricate/Exworks | 80d | 2006-03-01 A | 2006-08-16 A | EK000I1221, PK000I122K, EK000YA000 FS+5d | 100% |  | 2006-09-11 | 2006-12-29 |  |  |  |  | 2006-07-29 | 0 | 0 |  | 00 | PK | I21 | 000 | PK | I2122 |  | IR | I | H | P |  | N | Copy |  |  |  |  |  |  |
| PK000MD107 | MD305 Merc. Removal Bed - Eval Bids & Issue Recmd | 5d | 2006-03-01 A | 2006-03-03 A | EK000MD104, PK000MD106 | 100% |  | 2006-03-06 | 2006-03-10 |  |  |  |  | 2006-07-29 | 0 | 0 |  | 00 | PK | MD3 | 000 | PK | MD305 |  | FE | MD | E | P | 03 | X |  |  |  |  |  |  |  |
| PK000ML50P | Issue Formal P.O. for ML500 | 3d | 2006-03-01 A | 2006-04-25 A | EK000ML50E FF, PK000ML50J, PK000ML52J | 100% |  | 2006-04-20 | 2006-04-25 |  |  |  |  | 2006-07-29 | 0 | 0 |  | 00 | PK | ML5 | 000 | PK | ML500 | 2003L | FE | ML | K | P | 03 | Y |  | 4 | 5 | 10 |  |  |  |
| PK000PS00B | 000 SP Items - Receive Quotes | 15d | 2006-03-01 A | 2006-03-14 A | PK000PS00A | 100% |  | 2006-03-27 | 2006-04-14 |  |  |  |  | 2006-07-29 | 0 | 0 |  | 00 | PK | P90 | 000 | PK | PS000 |  | IR | P | C | P |  |  |  |  |  |  |  |  |  |
| PK000MB42S | MB420 - Marshaling 101-B Cast Peep Sites | 40d | 2006-03-02 A | 2006-12-01 A | PK000MB42K | 100% |  | 2006-05-15 | 2006-07-07 |  |  |  |  | 2006-07-29 | 0 | 0 | 60 | 00 | PK | MB4 | 000 | PK | MB420 | 101B | CE | MB | H | P |  |  |  |  |  |  | Shipped to Vendor |  |  |
| PK000MD108 | MD305 Merc. Removal Bed - Final Negotiate/Interim Award | 5d | 2006-03-03 A | 2006-03-06 A | EK000MD104, PK000MD107, EK000MD103, EK000PR610, EK000YA000 FF+5d | 100% |  | 2006-03-27 | 2006-03-31 |  |  |  |  | 2006-07-29 | 0 | 0 |  | 00 | PK | MD3 | 000 | PK | MD305 |  | FE | MD | G | P | 03 | X |  |  |  |  |  |  |  |
| PK000MU11J | 05B MU311 Final Negotiate/Interim Award | 10d | 2006-03-03 A | 2006-03-16 A | PK000MU11I | 100% |  | 2006-03-20 | 2006-03-31 |  |  |  | EBWK - Global | 2006-07-29 | 0 | 4 |  | 00 | PK | MU3 | 000 | PK | MU311 |  | NE | MU | G | P | 03 |  |  | 2 | 5 | 6 |  |  |  |
| PK000I221H | 000 Everest Control Valves - Fabricate/Exworks | 200d | 2006-03-06 A | 2007-01-29 | EK000I221F, PK000I220K FF | 100% | 1d | 2006-10-02 | 2007-07-06 | 504d | 0d |  |  | 2006-07-29 | 0 | 0 |  | 00 | PK | I22 | 000 | PK | I2211 |  | IR | I | H | P |  | N |  |  |  |  |  |  |  |
| PK000MD109 | MD305 Merc. Removal Bed - Issue Formal P.O. | 10d | 2006-03-06 A | 2006-04-11 A | EK000MD105, PK000MD108 | 100% |  | 2006-03-02 | 2006-03-15 |  |  |  |  | 2006-07-29 | 0 | 0 |  | 00 | PK | MD3 | 000 | PK | MD305 |  | FE | MD | K | P | 03 |  |  | 6 | 8 | 16 |  |  |  |
| PK000MD110 | MD305 Merc. Removal Bed - Fabricate/PO Promise | 225d | 2006-03-06 A | 2007-03-30 | PK000MD108, PK000MD109 FF | 80% | 45d | 2006-03-16 | 2007-01-24 | 157d | 0d | 2007-03-30 |  | 2006-07-29 | 0 | 4.7 | 160 | 00 | PK | MD3 | 000 | PK | MD305 |  | FE | MD | H | P | 03 |  |  | 240 | 244 | 266 |  | 13 |  |
| PK000ML52P | Issue Formal P.O. for ML501 | 3d | 2006-03-06 A | 2006-04-26 A | EK000ML50E FF, EK000EB015, EK000ML50Z, EK000YA000 FS+5d, EK000ML50F | 100% |  | 2006-04-20 | 2006-04-25 |  |  |  |  | 2006-07-29 | 0 | 0 |  | 00 | PK | ML5 | 000 | PK | ML501 |  | FE | ML | K | P |  | Y |  |  |  |  |  |  |  |
| PK000ML50K | ML500 - Fabricate/PO Promise 2003-L PAI/IA | 140d | 2006-03-06 A | 2007-03-12 | PK000ML50J, PK000ML50P SS, PK000ML52J | 78% | 31d | 2006-03-06 | 2006-09-15 | 78d | 0d | 2007-03-12 |  | 2006-07-29 | 0 | 0.7 | 140 | 00 | PK | ML5 | 000 | PK | ML500 | 2003L | FE | ML | H | P | 03 | Y |  | 130 | 140 | 160 |  | 13 |  |
| PK000MJ36K | MJ305 - Fabricate/PO Promise OSBL PUMPS | 250d | 2006-03-07 A | 2007-02-09 | PK000MJ36J, PK000MJ36P, EK000MJ36E FF | 96% | 10d | 2006-03-06 | 2007-02-16 | 60d | 0d |  |  | 2006-07-29 | 5.7 | 1.6 | 220 | 00 | PK | MJ3 | 000 | PK | MJ305 |  | PE | MJ | H | P |  |  |  | 230 | 250 | 260 |  | 13 |  |
| PK000MBP3U | MB311 - Shop Recv - 101-B Convection Tube & Pipe | 10d | 2006-03-10 A | 2006-05-22 A | PK000MBP3O FF | 100% |  | 2006-05-16 | 2006-05-29 |  |  |  |  | 2006-07-29 | 0 | 0 | 10 | 00 | PK | MB3 | 000 | PK | MB311 | 101B | CE | MB | N | P |  |  |  |  |  |  |  | 04 |  |
| PK000I352H | SIS - Fabricate Hardware | 60d | 2006-03-13 A | 2006-09-22 A | PK000I352G, PK000I352K FF, PK000I352K, EK000I352M | 100% |  | 2006-10-02 | 2006-12-22 |  |  |  |  | 2006-07-29 | 0 | 0 | 135 | 00 | PK | I35 | 000 | IC | I3520 |  |  | I | H | P | 03 |  |  | 50 | 60 | 80 |  | 02 |  |
| PK000PS00D | 000 SP Items - Eval Bids / Issue Recmd | 5d | 2006-03-14 A | 2006-03-21 A | EK000PS00C | 100% |  | 2006-04-24 | 2006-04-28 |  |  |  |  | 2006-07-29 | 0 | 0 |  | 00 | PK | P90 | 000 | PK | PS000 |  | IR | P | E | P |  |  |  |  |  |  |  |  |  |
| PK000I1100 | 020 Orific Plates - Fabricate/Exworks | 61d | 2006-03-16 A | 2006-08-01 A | EK000I1105, PK000I110K, EK000YA000 FS+5d | 100% |  | 2006-05-22 | 2006-08-14 |  |  |  |  | 2006-07-29 | 0 | 0 |  | 00 | PK | I21 | 000 | PK | I2110 |  | IR | I | H | P |  | N | Copy |  |  |  |  |  |  |
| PK000MU11P | 05B MU311 Issue Formal P.O. | 3d | 2006-03-16 A | 2006-03-16 A | PK000MU11J, EK000MU11E | 100% |  | 2006-03-16 | 2006-03-20 |  |  |  | EBWK - Global | 2006-07-29 | 0 | 0 |  | 00 | PK | MU3 | 000 | PK | MU311 |  | NE | MU | K | P | 03 |  |  | 2 | 3 | 5 |  |  |  |
| PK000I444K | Issue Formal Purchase Order - Shelters/ Analyzers | 10d | 2006-03-20 A | 2006-03-20 A | PK000I444G SS | 100% |  | 2006-05-29 | 2006-06-09 |  |  |  |  | 2006-07-29 | 0 | 1.9 |  | 00 | PK | I44 | 000 | PK | I4440 |  |  | I | K | P | 03 |  |  | 5 | 10 | 15 |  |  |  |
| PK000MJ71G | Issue MJ731 RFQ | 3d | 2006-03-20 A | 2006-04-10 A | EK000MJ73F | 100% |  | 2006-03-27 | 2006-03-29 |  |  |  |  | 2006-07-29 | 0 | 0 |  | 00 | PK | MJ7 | 000 | PK | MJ731 |  | PE | MJ | B | P |  | X |  |  |  |  |  |  |  |
| PK010E008B | 540-SB Admin. Area Pwr Supply - Inquiry REQ/RFQ | 20d | 2006-03-20 A | 2006-03-23 A | EK010E008A | 100% |  | 2006-05-01 | 2006-05-26 |  |  |  |  | 2006-07-29 | 0 | 0 |  | 00 | PK | EF5 | 000 | PK | E0008 |  |  | E | B | P | 03 |  |  | 15 | 20 | 25 |  |  |  |
| PK000PS00E | 000 SP Items - Final Negotiation / Interim Award | 10d | 2006-03-22 A | 2006-06-15 A | PK000PS00D, EK000EB015, EK000YA000 FF+5d | 100% |  | 2006-04-03 | 2006-04-14 |  |  |  |  | 2006-07-29 | 0 | 0 |  | 00 | PK | P90 | 000 | PK | PS000 |  | IR | P | G | P |  |  |  |  |  |  |  |  |  |
| PK010E008C | 540-SB Admin. Area Pwr Supply - Receive Bids | 10d | 2006-03-23 A | 2006-05-04 A | PK010E008B | 100% |  | 2006-05-01 | 2006-05-12 |  |  |  |  | 2006-07-29 | 0 | 2.1 |  | 00 | PK | EF5 | 000 | PK | E0008 |  |  | E | C | P | 03 | CD |  | 10 | 15 | 20 |  |  | 10 |
| PK000MU25I | 02G MU225 Eval Bids & Issue Recmd | 20d | 2006-03-24 A | 2006-04-18 A | EK000MU25D | 100% |  | 2006-03-13 | 2006-04-07 |  |  |  | EBWK - Global | 2006-07-29 | 9.3 | 3.6 |  | 00 | PK | MU2 | 000 | PK | MU225 |  | NE | MU | E | P | 03 |  |  | 4 | 5 | 20 |  |  |  |
| PK000MB68J | Final Negotiate/Interim Award - MB692 | 3d | 2006-03-30 A | 2006-04-03 A | EK000MB68D, PK000MB68I, EK000YA000 FF+5d | 100% |  | 2006-04-21 | 2006-04-25 |  |  |  |  | 2006-07-29 | 0 | 0 | 10 | 00 | PK | MB6 | 000 | PK | MB692 | 101B | CE | MB | G | P | 03 |  |  | 1 | 3 | 5 |  |  |  |
| PK000MB68K | MB692 - Fabricate/PO Promise 101-B Cat Vacuum Equip. | 130d | 2006-04-03 A | 2006-06-01 A | PK000MB68J, PK000MB68P FF | 100% |  | 2006-03-27 | 2006-09-22 |  |  |  |  | 2006-07-29 | 0 | 2.5 | 130 | 00 | PK | MB6 | 000 | PK | MB692 | 101B | CE | MB | H | P | 03 | CD |  | 40 | 60 | 80 |  |  | 97 |
| PK000MB68P | Issue Formal P.O. for MB692 | 10d | 2006-04-03 A | 2006-04-06 A | PK000MB68J | 100% |  | 2006-04-26 | 2006-05-09 |  |  |  |  | 2006-07-29 | 0 | 3.3 | 3 | 00 | PK | MB6 | 000 | PK | MB692 | 101B | CE | MB | K | P | 03 |  |  | 8 | 10 | 15 |  |  |  |
| PK000MU29I | Eval Bids & Issue Recmd MU292 | 5d | 2006-04-03 A | 2006-04-19 A | EK000MU29D | 100% |  | 2006-04-10 | 2006-04-14 |  |  |  |  | 2006-07-29 | 0 | 0 |  | 00 | PK | MU2 | 000 | PK | MU292 | 2404L | NE | MU | E | P | 03 | Y |  | 12 | 15 | 20 |  |  |  |
| PK000E002E | Transformer - Eval Bids/Issue Recmd | 15d | 2006-04-04 A | 2006-07-17 A | EK000E002D FF+3d, PK000E002C | 100% |  | 2006-04-10 | 2006-04-28 |  |  |  |  | 2006-07-29 | 0 | 0 |  | 00 | PK | EF5 | 000 | PK | E0002 |  |  | E | E | P | 03 | CD |  | 20 | 25 | 30 |  |  | 22 |
| PK000MB21F | Marshaling of Equip. 101-B Siding for MB212 | 40d | 2006-04-04 A | 2006-08-16 A | PK000MB21K | 100% |  | 2006-05-15 | 2006-07-07 |  |  |  |  | 2006-07-29 | 0 | 0 | 60 | 00 | PK | MB2 | 000 | PK | MB212 | 101B | CE | MB | H | P |  |  |  |  |  |  | Shipped 16Aug |  |  |
| PK000I3540 | ITCC - Vendor Update Pricing / Quote | 5d | 2006-04-06 A | 2006-04-28 A | EK000I3541 | 100% |  | 2006-04-17 | 2006-04-21 |  |  |  |  | 2006-07-29 | 0 | 0 |  | 00 | PK | I35 | 000 | IC | I3542 |  |  | I |  | E |  |  |  |  |  |  |  |  |  |
| PK000MJ71H | Receive Quotes MJ731 | 20d | 2006-04-10 A | 2006-05-05 A | PK000MJ71G | 100% |  |  |  |  |  |  |  | 2006-07-29 | 0 | 0 |  | 00 | PK | MJ7 | 000 | PK | MJ731 |  | PE | MJ | C | P |  | X |  |  |  |  |  |  |  |
| PK000ML43S | ML430 - Marshaling 110-L BENFIELD MIXER | 40d | 2006-04-11 A | 2006-08-16 A | PK000ML43K | 100% |  | 2006-05-09 | 2006-07-03 |  |  |  |  | 2006-07-29 | 0 | 0 |  | 00 | PK | ML4 | 000 | PK | ML430 | 110L | NE | ML | H | P |  |  |  |  |  |  | Shipped 16Aug |  |  |
| PK000MJ39J | Final Negotiate/Interim Award - MJ391/MJ392 | 6d | 2006-04-14 A | 2006-04-17 A | PK000MJ39M, EK000EB015, PK000MJ39I, EK000YA000 FF+5d | 100% |  | 2006-04-18 | 2006-04-25 |  |  |  |  | 2006-07-29 | 0 | 0 |  | 00 | PK | MJ3 | 000 | PK | MJ391 |  | PE | MJ | G | P | 03 | X |  | 4 | 6 | 8 |  |  |  |
| PK000MJ39P | Issue Formal P.O. for MJ391/MJ392 | 10d | 2006-04-17 A | 2006-07-20 A | PK000MJ39J | 100% |  | 2006-05-08 | 2006-05-19 |  |  |  |  | 2006-07-29 | 0 | 8.2 |  | 00 | PK | MJ3 | 000 | PK | MJ391 |  | PE | MJ | K | P | 03 | CD |  | 8 | 10 | 20 |  |  | 10 |
| PK000MJ39K | Fabricate/Exworks FIREWATER PUMPS | 200d | 2006-04-17 A | 2007-02-09 | PK000MJ39J, PK000MJ39P FF, EK000MJ39E FF | 95% | 10d | 2006-04-17 | 2007-01-19 | 60d | 0d | 2007-02-09 |  | 2006-07-29 | 0 | 0 | 200 | 00 | PK | MJ3 | 000 | PK | MJ391 |  | PE | MJ | H | P | 03 | CD |  | 110 | 130 | 170 |  | 13 | 200 |
| PK000MU25J | 02G MU225 Final Negotiate/Interim Award | 3d | 2006-04-18 A | 2006-05-26 A | PK000MU25I | 100% |  | 2006-04-18 | 2006-04-20 |  |  |  | EBWK - Global | 2006-07-29 | 9.3 | 6.7 |  | 00 | PK | MU2 | 000 | PK | MU225 |  | NE | MU | G | P | 03 |  |  | 15 | 18 | 40 |  |  |  |
| PK000MU29J | Final Negotiate/Interim Award - MU292 | 5d | 2006-04-19 A | 2006-04-19 A | PK000MU29I, EK000EB015, EK000YA000 FF+5d | 100% |  | 2006-05-02 | 2006-05-08 |  |  |  |  | 2006-07-29 | 0 | 1.1 |  | 00 | PK | MU2 | 000 | PK | MU292 | 2404L | NE | MU | G | P | 03 |  |  | 4 | 5 | 7 |  |  |  |
| PK000MU29K | MU292 - Fabricate/PO Promise 2404-L | 120d | 2006-04-19 A | 2006-09-18 A | PK000MU29J, PK000MU29P FF | 100% |  | 2006-04-17 | 2006-09-29 |  |  |  |  | 2006-07-29 | 0 | 0 | 120 | 00 | PK | MU2 | 000 | PK | MU292 | 2404L | NE | MU | H | P | 03 |  |  | 115 | 120 | 130 |  | 13 |  |
| PK000MU29P | Issue Formal P.O. for MU292 | 3d | 2006-04-19 A | 2006-05-01 A | EK000MU29E, PK000MU29J | 100% |  | 2006-04-17 | 2006-04-19 |  |  |  |  | 2006-07-29 | 0 | 0 |  | 00 | PK | MU2 | 000 | PK | MU292 | 2404L | NE | MU | K | P | 03 | CD |  | 8 | 10 | 14 |  |  | 3 |
| PK000MU32J | 01D MU322 Final Negotiate/Interim Award | 10d | 2006-04-24 A | 2006-05-01 A | PK000MU32I | 100% |  | 2006-05-02 | 2006-05-15 |  |  |  | EBWK - Global | 2006-07-29 | 5.6 | 3.6 |  | 00 | PK | MU3 | 000 | PK | MU322 |  | NE | MU | G | P | 03 | CD |  | 12 | 16 | 24 |  |  | 13 |
| PK020IC210 | 020 Control Valves - Fabricate/Exworks | 200d | 2006-04-26 A | 2006-12-04 A | EK020IC213, PK000I210K, EK000YA000 | 100% |  | 2006-04-26 | 2007-01-30 |  |  |  |  | 2006-07-29 | 0 | 0 |  | 00 | PK | I22 | 000 | PK | I2210 |  | IR | I | H | P |  | N | Copy |  |  |  |  |  |  |
| PK000E004B | UPS System - Inquiry REQ/RFQ | 20d | 2006-04-27 A | 2006-05-08 A | EK000E004A | 100% |  | 2006-05-01 | 2006-05-26 |  |  |  |  | 2006-07-29 | 7.6 | 0 |  | 00 | PK | EF6 | 000 | PK | E0004 |  |  | E | B | P | 03 |  |  | 10 | 20 | 25 |  |  |  |
| PK000MJ38B | Eval Bids & Issue Recmd MJ308 | 5d | 2006-04-27 A | 2006-05-24 A | PK000MJ38E | 100% |  | 2006-04-17 | 2006-04-21 |  |  |  |  | 2006-07-29 | 8.3 | 0 |  | 00 | PK | MJ3 | 000 | PK | MJ308 | 2100JA | CE | MJ | E | P | 03 | CD |  | 8 | 10 | 20 |  |  | 5 |
| PK010IC210 | 010 Control Valves - Fabricate/Exworks | 200d | 2006-04-28 A | 2006-09-26 A | EK010IC213, PK000I210K, EK000YA000, EK010IC210 | 100% |  | 2006-07-03 | 2007-04-06 |  |  |  |  | 2006-07-29 | 0 | 0 |  | 00 | PK | I22 | 000 | PK | I2210 |  | IR | I | H | P |  | N |  |  |  |  |  |  |  |
| PK030IC210 | 030 Control Valves - Fabricate/Exworks | 200d | 2006-04-28 A | 2006-12-16 A | EK030IC213, PK000I210K, EK000YA000, EK030IC210 | 100% |  | 2006-07-03 | 2007-04-06 |  |  |  |  | 2006-07-29 | 0 | 0 |  | 00 | PK | I22 | 000 | PK | I2210 |  | IR | I | H | P |  | N |  |  |  |  |  |  |  |
| PK000MBP3Z | MB311 - Shop Recv - 101-B Radiant Tube & Pipe | 10d | 2006-05-01 A | 2006-05-01 A | PK000MBP3K | 100% |  | 2006-06-12 | 2006-06-23 |  |  |  |  | 2006-07-29 | 0 | 0 | 10 | 00 | PK | MB3 | 000 | PK | MB311 | 101B | CE | MB | N | P |  |  |  |  |  |  |  | 04 |  |
| PK000ML90J | Final Negotiate/Interim Award - ML900 | 10d | 2006-05-01 A | 2006-05-03 A | EK000EB015, EK000ML50Z, EK000YA000 FF+5d, EK000ML50F, PK000ML90I | 100% |  | 2006-05-02 | 2006-05-15 |  |  |  |  | 2006-07-29 | 0 | 0 |  | 00 | PK | ML9 | 000 | PK | ML900 |  | FE | ML | G | P |  | X |  |  |  |  |  |  |  |
| PK000MU32P | 01D MU322 Issue Formal P.O. | 3d | 2006-05-01 A | 2006-05-23 A | PK000MU32J, EK000MU32E | 100% |  | 2006-05-12 | 2006-05-16 |  |  |  | EBWK - Global | 2006-07-29 | 0 | 0 |  | 00 | PK | MU3 | 000 | PK | MU322 |  | NE | MU | K | P | 03 | CD |  | 16 | 20 | 25 |  |  | 3 |
| PK000ML42S | ML420 - Marshaling CARTRIDGE FILTERS | 40d | 2006-05-01 A | 2006-08-16 A | PK000ML42K | 100% |  | 2006-05-01 | 2006-06-23 |  |  |  |  | 2006-07-29 | 0 | 0 |  | 00 | PK | ML4 | 000 | PK | ML420 |  | NE | ML | H | P |  |  |  |  |  |  | Shipped 16Aug |  |  |
| PK000PIA1H | Bulk Piping A/G & U/G - Transport / Delivery (First CS,SS,U/G) | 50d | 2006-05-02 A | 2006-07-03 A | PK000PIA1G | 100% |  | 2006-06-08 | 2006-08-16 |  |  |  |  | 2006-07-29 | 0 | 1.8 | 50 | 00 | PK | P00 | 000 | PK | PIA11 |  |  | P | N | P | 02 |  |  | 40 | 50 | 55 |  | 01 |  |
| PK000MB61L | Marshaling of 101-B Burners MB610 | 40d | 2006-05-02 A | 2006-08-16 A | PK000MB61K | 100% |  | 2005-10-17 | 2005-12-09 |  |  |  |  | 2006-07-29 | 0 | 0 | 130 | 00 | PK | MB6 | 000 | PK | MB610 | 101BA | CE | MB | H | P |  | X |  |  |  |  | Shipped 16Aug |  |  |
| PK000MU32K | 01D MU322 - Fabricate/PO Promise COOLING WTR FILTER & CLARIFIER | 80d | 2006-05-02 A | 2006-11-16 A | PK000MU32J, PK000MU32P FF | 100% |  | 2006-05-02 | 2006-08-21 |  |  |  | EBWK - Global | 2006-07-29 | 0 | 0 |  | 00 | PK | MU3 | 000 | PK | MU322 |  | NE | MU | H | P | 03 | CD |  | 85 | 90 | 115 |  |  | 30 |
| PK000MBP3X | MB311 - Shop Recv - 101-B Convection Fittings | 10d | 2006-05-03 A | 2006-05-16 A | PK000MBP3Q | 100% |  | 2006-06-12 | 2006-06-23 |  |  |  |  | 2006-07-29 | 0 | 0 | 10 | 00 | PK | MB3 | 000 | PK | MB311 | 101B | CE | MB | N | P |  |  |  |  |  |  |  | 04 |  |
| PK000ML90K | ML900 - Fabricate/PO Promise Evap. Pond Spray Nzl. | 140d | 2006-05-03 A | 2006-08-23 A | PK000ML90J, PK000ML90P FF | 100% |  | 2006-05-16 | 2006-11-27 |  |  |  |  | 2006-07-29 | 0 | 0 | 140 | 00 | PK | ML9 | 000 | PK | ML900 |  | FE | ML | H | P |  | Y |  |  |  |  |  | 13 |  |
| PK000ML90P | Issue Formal P.O. for ML900 | 3d | 2006-05-03 A | 2006-05-15 A | EK000ML50E, PK000ML90J | 100% |  | 2006-05-16 | 2006-05-18 |  |  |  |  | 2006-07-29 | 0 | 0 |  | 00 | PK | ML9 | 000 | PK | ML900 |  | FE | ML | K | P |  | Y |  |  |  |  |  |  |  |
| PK000E00C | UPS System - Receive Bids | 10d | 2006-05-08 A | 2006-06-09 A | PK000E004B | 100% |  | 2006-05-01 | 2006-05-12 |  |  |  |  | 2006-07-29 | 7.6 | 1.3 |  | 00 | PK | EF6 | 000 | PK | E0004 |  |  | E | C | P | 03 | CD |  | 10 | 15 | 20 |  |  | 5 |
| PK000MC61F | MC610 - Marshaling DBL PIPE EXCH 161-C | 40d | 2006-05-10 A | 2006-08-16 A | PK000MC61L | 100% |  | 2006-05-10 | 2006-07-04 |  |  |  |  | 2006-07-29 | 0 | 0 | 160 | 00 | PK | MC6 | 000 | PK | MC610 | 161C | PE | MC | H | P |  | X |  |  |  |  | Shipped 16Aug | 13 |  |
| PK000I444D | Vendor Update Pricing - Shelters/ Analyzers | 5d | 2006-05-15 A | 2006-06-05 A | EK000I444C | 100% |  | 2006-05-15 | 2006-05-19 |  |  |  |  | 2006-07-29 | 0 | 2.3 |  | 00 | PK | I44 | 000 | IC | I4440 |  |  | I |  | P | 03 |  |  | 4 | 5 | 10 |  |  |  |
| PK000MB83S | MB630 - Marshaling 101-B Air Preheater | 40d | 2006-05-15 A | 2006-08-16 A | PK000MB63K | 100% |  | 2006-05-15 | 2006-07-07 |  |  |  |  | 2006-07-29 | 0 | 0 | 180 | 00 | PK | MB6 | 000 | PK | MB630 | 101BL1 | CE | MB | H | P |  | X |  |  |  |  | Shipped 16Aug | 04 |  |
| PK000MU61S | MU611 - Marshaling 2101-U, 2101-UJA Thru UJG CW TWR & Fans | 40d | 2006-05-16 A | 2006-05-26 A | PK000MU61K | 100% |  | 2006-06-19 | 2006-08-11 |  |  |  |  | 2006-07-29 | 0 | 0 |  | 00 | PK | MU6 | 000 | PK | MU611 | 2101U | PE | MU | H | P |  |  |  |  |  |  | Shown Rcv'd at Site 14July |  |  |
| PK000MU61U | MU611 - Marshaling 2101-UJA Thru UJGM CW Motors | 40d | 2006-05-16 A | 2006-05-26 A | PK000MU61T | 100% |  | 2006-06-19 | 2006-08-11 |  |  |  |  | 2006-07-29 | 0 | 0 |  | 00 | PK | MU6 | 000 | PK | MU611 | 2101U | PE | MU | H | P |  |  |  |  |  |  | Shown Rcv'd at Site 14July |  |  |
| PK000I3521 | SIS - Vendor Provides Software & Workstations | 20d | 2006-05-16 A | 2006-05-25 A | EK000I3520 SS | 100% |  | 2006-05-22 | 2006-06-16 |  |  |  |  | 2006-07-29 | 0 | 0 | 20 | 00 | PK | I35 | 000 | IC | I3520 |  |  | I |  | E | 06 |  |  | 15 | 20 | 40 |  | 02 |  |
| PK010I1210 | Vortex Meters - Fabricate/Exworks | 55d | 2006-05-16 A | 2006-12-13 A | EK010I1211 FS+40d, PK000I121K, EK000YA000, EK010I1210 | 100% |  | 2006-05-16 | 2006-07-31 |  |  |  |  | 2006-07-29 | 0 | 0 |  | 00 | PK | I21 | 000 | PK | I2121 |  | IR | I | H | P |  | N |  |  |  |  |  |  |  |
| PK000I3520 | SIS - Vendor Update Pricing / Quote | 5d | 2006-05-22 A | 2006-05-29 A | EK000I3521 | 100% |  | 2006-05-22 | 2006-05-26 |  |  |  |  | 2006-07-29 | 0 | 0 |  | 00 | PK | I35 | 000 | IC | I3520 |  |  | I |  | E |  |  |  |  |  |  |  |  |  |
| PK010I1100 | 010 Orific Plates - Fabricate/Exworks | 65d | 2006-05-22 A | 2006-08-02 A | EK010I1105 FS+40d, PK000I110K, EK000YA000 FS+5d, EK050I1105 FF | 100% |  | 2006-05-22 | 2006-08-18 |  |  |  |  | 2006-07-29 | 0 | 0 |  | 00 | PK | I21 | 000 | PK | I2110 |  | IR | I | H | P |  | N |  |  |  |  |  |  |  |

Notes:
- PK000MJ38B: P3 Activity Log Info: Using ISSP (Goulds) / Not Required

| ID | Activity | Type | Duration | Start | Finish | Predecessors | Complete | Remaining | Planned start | Planned finish | Total float | Free float | Expected finish | Calendar | zData Date | Optimistic Duration | Most Likely Duration | Pessimistic Duration | PCA Criticality Index | PCA Duration Sensitivity | EB02 - UNIT | EB01 - RESP | EB06 - WORK OP | EB03 - AREA | EB05 - DISCIPLINE | EB07 - REQN | EB08 - TAG | EB10 - KEY | EB04 - CLASS | EB09 - IPMS | EB00 - EPC | EB21 - Rev 2 Risk Associations | user_integer2 | EB14 - RISK | zComments | user_text1 | user_integer1 | EB11 - FLAG | EB18 - Grouping |
| --- | --- | --- | --- | --- | --- | --- | --- | --- | --- | --- | --- | --- | --- | --- | --- | --- | --- | --- | --- | --- | --- | --- | --- | --- | --- | --- | --- | --- | --- | --- | --- | --- | --- | --- | --- | --- | --- | --- | --- |
| PK000MJ38M | Final Negotiate/Interim Award - MJ308 |  | 10d | 2006-05-24 A | 2006-05-26 A | EK000EB015, PK000MJ38B, EK000MJ38T | 100% |  | 2006-05-30 | 2006-06-12 |  |  |  |  | 2006-07-29 | 8 | 10 | 15 | 8.3 | 2.5 | 00 | PK | MJ3 | 000 | PK | MJ308 | 2100JA | CE | MJ | G | P | 03 |  |  |  |  |  |  |  |
| PK000MJ38R | Issue Formal P.O. for MJ308 |  | 10d | 2006-05-24 A | 2006-07-07 A | PK000MJ38M, EK000YA000 FF+5d | 100% |  | 2006-05-22 | 2006-06-02 |  |  |  |  | 2006-07-29 | 8 | 10 | 15 | 0 | 0 | 00 | PK | MJ3 | 000 | PK | MJ308 | 2100JA | CE | MJ | K | P | 03 |  |  |  |  |  |  |  |
| PK000MJ38U | MJ308 - Fabricate/PO Promisse ISBL ANSI/API PUMPS |  | 200d | 2006-05-24 A | 2007-02-09 | PK000MJ38M, PK000MJ38R FF, EK000MJ38C FF | 95% | 10d | 2006-05-22 | 2007-02-23 | 198d | 0d | 2007-02-09 |  | 2006-07-29 | 180 | 200 | 260 | 0.2 | 0 | 00 | PK | MJ3 | 000 | PK | MJ308 | 2100JA | CE | MJ | H | P | 03 | 200 | 13 |  |  |  |  |  |
| PK000MU35S | MU350 - Marshaling 101-U DEAERATOR |  | 40d | 2006-05-25 A | 2006-08-16 A | PK000MU35K | 100% |  | 2006-05-30 | 2006-07-24 |  |  |  |  | 2006-07-29 |  |  |  | 0 | 0 | 00 | PK | MU3 | 000 | PK | MU350 | 101U | FE | MU | H | P |  | 130 | 13 | Shipped 16Aug |  |  |  |  |
| PK000MU25K | MU225 - 02G Fabricate/PO Promise LIFT STATION |  | 80d | 2006-05-26 A | 2006-11-30 A | PK000MU25J, PK000MU25P FF | 100% |  | 2006-06-13 | 2006-10-02 |  |  |  | EBWK - Global | 2006-07-29 | 70 | 80 | 90 | 0 | 0.6 | 00 | PK | MU2 | 000 | PK | MU225 |  | NE | MU | H | P | 03 |  |  |  |  |  |  |  |
| PK000MU25P | 02G MU225 Issue Formal P.O. |  | 3d | 2006-05-26 A | 2006-07-11 A | PK000MU25J, EK000MU25E FF | 100% |  | 2006-06-09 | 2006-06-13 |  |  |  | EBWK - Global | 2006-07-29 | 2 | 3 | 10 | 0 | 0 | 00 | PK | MU2 | 000 | PK | MU225 |  | NE | MU | K | P | 03 |  |  |  |  |  |  |  |
| PK000MU61O | MU611 - Transport/Customes 2101-U, 2101-UJA Thru UJG CW TWR & Fans |  | 30d | 2006-05-29 A | 2006-07-14 A | PK000MU61S | 100% |  | 2006-07-17 | 2006-08-25 |  |  |  |  | 2006-07-29 |  |  |  | 0 | 0 | 00 | PK | MU6 | 000 | PK | MU611 | 2101U | PE | MU | N | P |  | 50 | 11 |  |  |  |  |  |
| ZZ1040 | MU611 - Transport/Customes 2101-UJA Thru UJGM CW Motors |  | 30d | 2006-05-29 A | 2006-07-14 A | PK000MU61U | 100% |  | 2006-07-17 | 2006-08-25 |  |  |  |  | 2006-07-29 |  |  |  | 0 | 0 | 00 | PK | MU6 | 000 | PK | MU611 | 2101U | PE | MU | N | P |  | 50 | 11 |  |  |  |  |  |
| PK000E001E | Sub Stations - Eval Bids/Issue Recmd |  | 15d | 2006-05-29 A | 2006-06-26 A | EK000E001D FF+3d, PK000E001C | 100% |  | 2006-05-29 | 2006-06-16 |  |  |  |  | 2006-07-29 | 20 | 25 | 30 | 0 | 3 | 00 | PK | EF1 | 000 | PK | E0001 |  |  | E | E | P | 03 |  |  |  |  |  |  |  |
| PK010E008F | 540-SG Admin. Area Pwr Supply - Eval Bids/Issue Recmd |  | 15d | 2006-05-29 A | 2006-10-18 A | EK010E008D FF+3d, PK010E008C | 100% |  | 2006-05-29 | 2006-06-16 |  |  |  |  | 2006-07-29 | 10 | 15 | 20 | 0 | 5.3 | 00 | PK | EF5 | 000 | PK | E0008 |  |  | E | E | P | 03 |  |  |  | Suspended |  |  |  |
| PK000MB34Z | Shop Recv.- 101-B Finned Convection Tubes & Pipe |  | 10d | 2006-05-30 A | 2006-06-09 A | PK000MB34K | 100% |  | 2006-06-12 | 2006-06-23 |  |  |  |  | 2006-07-29 |  |  |  | 0 | 0 | 00 | PK | MB3 | 000 | PK | MB340 | 101B | CE | MB |  | P |  | 10 | 04 |  |  |  |  |  |
| PK000MBP3V | MB311 - Shop Recv - 101-B Crossover Tube & Pipe |  | 10d | 2006-05-30 A | 2006-06-05 A | PK000MBP3R | 100% |  | 2006-06-12 | 2006-06-23 |  |  |  |  | 2006-07-29 |  |  |  | 0 | 0 | 00 | PK | MB3 | 000 | PK | MB311 | 101B | CE | MB | N | P |  | 10 | 04 |  |  |  |  |  |
| PK000MBP3W | MB311 - Shop Recv - 101-B Crossover Fittings |  | 10d | 2006-05-30 A | 2006-06-05 A | PK000MBP3S | 100% |  | 2006-06-12 | 2006-06-23 |  |  |  |  | 2006-07-29 |  |  |  | 0 | 0 | 00 | PK | MB3 | 000 | PK | MB311 | 101B | CE | MB | N | P |  | 10 | 04 |  |  |  |  |  |
| PK000MJ75S | MJ750 - Marshaling SURFACE CONDENSORS |  | 40d | 2006-06-02 A | 2006-08-15 A | PK000MJ75K | 100% |  | 2006-06-05 | 2006-07-28 |  |  |  |  | 2006-07-29 |  |  |  | 0 | 0 | 00 | PK | MJ7 | 000 | PK | MJ750 |  | PE | MJ | H | P |  | 260 | 13 | Shipped 16Aug | Spare parts shiped in August. |  |  |  |
| PK000MB68S | MB692 - Marshaling 101-B Cat Vacuum Equip. |  | 40d | 2006-06-05 A | 2006-08-16 A | PK000MB68K | 100% |  | 2006-06-27 | 2006-08-21 |  |  |  |  | 2006-07-29 | 30 | 40 | 50 | 0 | 1.6 | 00 | PK | MB6 | 000 | PK | MB692 | 101B | CE | MB | H | P | 03 | 130 |  | Shipped 16Aug |  | 29 | CD |  |
| PK000MJ71I | Eval Bids & Issue Recmd MJ731 |  | 15d | 2006-06-05 A | 2006-06-26 A | EK000MJ73D, PK000MJ71H | 100% |  | 2006-06-19 | 2006-07-07 |  |  |  |  | 2006-07-29 |  |  |  | 0 | 0 | 00 | PK | MJ7 | 000 | PK | MJ731 |  | PE | MJ | E | P |  |  |  |  |  |  | X |  |
| PK010IC252 | MOV Valves - Fabricate/Exworks |  | 260d | 2006-06-05 A | 2007-02-26 | EK010IC252, EK000YA000 FS+5d | 92% | 21d | 2006-07-03 | 2007-06-29 | 475d | 0d | 2007-02-26 |  | 2006-07-29 |  |  |  | 0 | 0 | 00 | PK | I22 | 000 | PK | I2220 |  | IR | I | H | P |  |  |  |  |  |  | N |  |
| PK000I617H | Fabricate / Exworks - Magnetic Lvl Gauges |  | 45d | 2006-06-06 A | 2006-12-15 A | EK000I617A FS+40d, PK000I617K | 100% |  | 2006-08-21 | 2006-10-20 |  |  |  |  | 2006-07-29 |  |  |  | 0 | 0 | 00 | PK | I16 | 000 | PK | I1617 |  |  | I | H | P |  |  |  |  |  |  |  |  |
| PK000MB65S | MB622 - Marshaling 101-B Penthouse Circ Fans |  | 40d | 2006-06-12 A | 2006-08-16 A | PK000MB65K | 100% |  | 2006-06-16 | 2006-08-10 |  |  |  |  | 2006-07-29 |  |  |  | 0 | 0 | 00 | PK | MB6 | 000 | PK | MB622 | 101B | CE | MB | H | P |  | 140 |  | Shipped 16Aug |  |  |  |  |
| PK000I1270 | Fabricate/Exworks Magnetic Flow Meters |  | 80d | 2006-06-12 A | 2006-10-30 A | EK000I1271, PK000I127K, EK000YA000 FS+5d | 100% |  | 2006-06-12 | 2006-09-29 |  |  |  |  | 2006-07-29 |  |  |  | 0 | 0 | 00 | PK | I21 | 000 | PK | I2127 |  | IR | I | H | P |  |  |  |  |  |  | N | Copy |
| PK000MB41Z | Shop Recv. - 101-B Cast Tube Supports |  | 10d | 2006-06-12 A | 2006-06-23 A | EK000MB41E FS+30d, EK000EB015 FS+30d | 100% |  |  |  |  |  |  |  | 2006-07-29 |  |  |  | 0 | 0 | 00 | PK | MB4 | 000 | PK | MB410 | 101B | CE | MB |  | P |  | 10 | 04 |  |  |  | X |  |
| PK000I616H | Fabricate / Exworks - Steam Drum Lvl Gauges |  | 45d | 2006-06-13 A | 2006-09-15 A | EK000I616A FS+40d, PK000I616K | 100% |  | 2006-08-21 | 2006-10-20 |  |  |  |  | 2006-07-29 |  |  |  | 0 | 0 | 00 | PK | I16 | 000 | PK | I1616 |  |  | I | H | P |  |  |  |  |  |  |  |  |
| PK000MB33S | MB333 - Marshaling Riser Transition 101-B |  | 40d | 2006-06-14 A | 2006-11-10 A | PK000MB33K | 100% |  | 2006-06-12 | 2006-08-04 |  |  |  |  | 2006-07-29 |  |  |  | 0 | 0 | 00 | PK | MB3 | 000 | PK | MB333 | 101B | CE | MB | H | P |  | 130 | 04 | Shipped 11Nov |  |  |  |  |
| PK000PS00F | 000 SP Items - Issue Formal Blanket P.O. |  | 5d | 2006-06-19 A | 2006-07-13 A | PK000PS00E | 100% |  | 2006-06-19 | 2006-06-23 |  |  |  |  | 2006-07-29 |  |  |  | 0 | 0 | 00 | PK | P90 | 000 | PK | PS000 |  | IR | P | K | P |  |  |  |  |  |  |  |  |
| PK000MD46S | MD411 - Marshaling OSBL DRUMS - 2203-F & 2204-F |  | 40d | 2006-06-21 A | 2006-08-16 A | PK000MD46K | 100% |  | 2006-07-21 | 2006-09-14 |  |  |  |  | 2006-07-29 |  |  |  | 0 | 0 | 00 | PK | MD4 | 000 | PK | MD411 |  | PE | MD | H | P |  | 125 | 13 | Shipped 16Aug |  |  |  |  |
| PK000E001G | Sub Stations - Interim Award |  | 5d | 2006-06-27 A | 2006-07-03 A | PK000E001E, EK020EL125 | 100% |  | 2006-06-19 | 2006-06-23 |  |  |  |  | 2006-07-29 | 4 | 5 | 10 | 0 | 0 | 00 | PK | EF1 | 000 | PK | E0001 |  |  | E | G | P | 03 |  |  |  |  |  |  |  |
| PK000I623H | Fabricate / Exworks - Multi-Point Thermocouples |  | 55d | 2006-06-27 A | 2007-01-29 | EK000I623A FS+40d, PK000I623K | 98% | 1d | 2007-01-05 | 2007-03-22 | 84d | 0d |  |  | 2006-07-29 |  |  |  | 0 | 0 | 00 | PK | I16 | 000 | PK | I1623 |  |  | I | H | P |  |  |  |  |  |  |  |  |
| PK000ML51S | ML512 - Marshaling 2102-L LOADING ARM |  | 40d | 2006-06-29 A | 2006-09-08 A | PK000ML51K | 100% |  | 2006-07-25 | 2006-09-18 |  |  |  |  | 2006-07-29 |  |  |  | 0 | 0 | 00 | PK | ML5 | 000 | PK | ML512 | 2102L | FE | ML | H | P |  | 190 | 13 | Shown Rcv'd at Site 01Nov |  |  |  |  |
| PK000I1161 | 020 Wedge Flow Meters - Fabricate/Exworks |  | 80d | 2006-06-30 A | 2006-10-12 A | EK000I1161 FS+50d, PK000I116K, EK000YA000 | 100% |  | 2006-08-21 | 2006-12-08 |  |  |  |  | 2006-07-29 |  |  |  | 0 | 0 | 00 | PK | I21 | 000 | PK | I2116 |  | IR | I | H | P |  |  |  |  |  |  | N | Copy |
| PK000MBP4O | MB312 - Transport/Customes 101-B Radiant Cast Stringer Grids |  | 20d | 2006-07-03 A | 2006-07-21 A | PK000MBP4Q | 100% |  | 2006-08-01 | 2006-08-28 |  |  |  |  | 2006-07-29 |  |  |  | 0 | 0 | 00 | PK | MB3 | 000 | PK | MB312 | 101B | CE | MB | N | P |  | 20 | 04 |  |  |  |  |  |
| PK000MBP4S | MB312 - Transport/Customes 101-B Radiant Cast Tube/Riser/Manifold |  | 20d | 2006-07-03 A | 2006-07-21 A | PK000MBP4R | 100% |  | 2006-07-31 | 2006-08-25 |  |  |  |  | 2006-07-29 |  |  |  | 0 | 0 | 00 | PK | MB3 | 000 | PK | MB312 | 101B | CE | MB | N | P |  | 20 | 04 |  |  |  |  |  |
| PK000MD44S | MD404 - Marshaling 109-F |  | 40d | 2006-07-03 A | 2006-08-16 A | PK000MD44K | 100% |  | 2006-07-17 | 2006-09-08 |  |  |  |  | 2006-07-29 |  |  |  | 0 | 0 | 00 | PK | MD4 | 000 | PK | MD404 | 109F | NE | MD | H | P |  | 140 | 13 | Shipped 16Aug |  |  |  |  |
| PK000PIA1J | Bulk Piping A/G & U/G - Receive at Site FIRST (CS,SS,U/G) | milestone | 0d | 2006-07-03 A | 2006-07-03 A | PK000PIA1H SF+30d, CK000YA306, CK000YA306 FF | 100% |  | 2006-08-19 | 2006-08-19 |  |  |  | EBWK 6 Day Egypt Holidays | 2006-07-29 |  |  |  | 0 | 0 | 00 | PK | P00 | 000 | PK | PIA11 |  |  | P | L | P |  | 0 |  |  |  |  |  |  |
| PK000PIA4H | Product Line Piping - Transport / Delivery to Insulation Shop |  | 20d | 2006-07-03 A | 2006-07-24 A | PK000PIA4G FF | 100% |  | 2007-03-19 | 2007-04-13 |  |  |  |  | 2006-07-29 | 5 | 6 | 8 | 0 | 0.9 | 00 | PK | P00 | 000 | PK | PIA41 |  |  | P | N | P | 02 | 50 | 01 |  |  |  |  |  |
| PK000MJ71J | Final Negotiate/Interim Award - MJ731 |  | 3d | 2006-07-03 A | 2006-07-07 A | PK000MJ71I, EK000EB015 | 100% |  | 2006-07-03 | 2006-07-05 |  |  |  |  | 2006-07-29 |  |  |  | 0 | 0 | 00 | PK | MJ7 | 000 | PK | MJ731 |  | PE | MJ | G | P |  |  |  |  |  |  |  |  |
| PK000E001K | Sub Stations - Formal Award |  | 10d | 2006-07-04 A | 2006-07-13 A | PK000E001G, EK000EB015, EK000YA000 FF+5d | 100% |  | 2006-09-18 | 2006-09-29 |  |  |  |  | 2006-07-29 | 8 | 10 | 12 | 0 | 0 | 00 | PK | EF1 | 000 | PK | E0001 |  |  | E | K | P | 03 |  |  |  |  |  |  |  |
| PK000MD44M | MD404 - Marshaling 107-F |  | 40d | 2006-07-06 A | 2006-08-16 A | PK000MD44L | 100% |  | 2006-07-17 | 2006-09-08 |  |  |  |  | 2006-07-29 |  |  |  | 0 | 0 | 00 | PK | MD4 | 000 | PK | MD404 | 107F | NE | MD | H | P |  | 140 | 13 | Shipped 16Aug |  |  |  |  |
| PK000MD22S | MD202 - Marshaling TOWERS 103/105-E |  | 40d | 2006-07-07 A | 2006-08-16 A | PK000MD22K | 100% |  | 2006-09-07 | 2006-11-01 |  |  |  |  | 2006-07-29 |  |  |  | 0 | 0 | 00 | PK | MD2 | 000 | PK | MD202 |  | FE | MD | H | P |  | 160 | 13 | Shipped 16Aug |  |  |  |  |
| PK000MD45S | MD405 - Marshaling ISBL DRUMS - 156-F & 157-F |  | 40d | 2006-07-07 A | 2006-08-16 A | PK000MD45K | 100% |  | 2006-07-18 | 2006-09-11 |  |  |  |  | 2006-07-29 |  |  |  | 0 | 0 | 00 | PK | MD4 | 000 | PK | MD405 |  | CE | MD | H | P |  | 125 | 13 | Shipped 16Aug |  |  |  |  |
| PK000MD47S | MD406 - Marshaling ISBL DRUMS 103-F |  | 40d | 2006-07-07 A | 2006-08-16 A | PK000MD47K | 100% |  | 2006-07-03 | 2006-08-25 |  |  |  |  | 2006-07-29 |  |  |  | 0 | 0 | 00 | PK | MD4 | 000 | PK | MD406 | 103F | CE | MD | H | P |  | 180 | 13 | Shipped 16Aug |  |  |  |  |
| PK000MD42A | MD402 -Marshaling 144-F |  | 40d | 2006-07-10 A | 2006-08-16 A | PK000MD42N | 100% |  | 2006-07-17 | 2006-09-08 |  |  |  |  | 2006-07-29 |  |  |  | 0 | 0 | 00 | PK | MD4 | 000 | PK | MD402 | 144F | CE | MD | H | P |  | 175 | 13 | Shipped 16Aug |  |  |  |  |
| PK000MD42T | MD402 -Marshaling 104-F |  | 40d | 2006-07-10 A | 2006-08-16 A | PK000MD42N | 100% |  | 2006-07-17 | 2006-09-08 |  |  |  |  | 2006-07-29 |  |  |  | 0 | 0 | 00 | PK | MD4 | 000 | PK | MD402 | 104F | CE | MD | H | P |  | 175 | 13 | Shipped 16Aug |  |  |  |  |
| PK000MJ71K | MJ731 - Fabricate/PO Promise EMERG PWR GENERATOR |  | 140d | 2006-07-10 A | 2007-03-23 | PK000MJ71J, PK000MJ71P FF | 71% | 40d | 2006-07-17 | 2007-01-26 | 70d | 0d | 2007-03-23 |  | 2006-07-29 |  |  |  | 0 | 0 | 00 | PK | MJ7 | 000 | PK | MJ731 |  | PE | MJ | H | P |  | 140 | 13 |  |  |  |  |  |
| PK000MJ71P | Issue Formal P.O. for MJ731 |  | 10d | 2006-07-10 A | 2006-07-26 A | EK000MJ73E FF, PK000MJ71J | 100% |  | 2006-07-03 | 2006-07-14 |  |  |  |  | 2006-07-29 |  |  |  | 0 | 0 | 00 | PK | MJ7 | 000 | PK | MJ731 |  | PE | MJ | K | P |  |  |  |  |  |  |  |  |
| PK000MC21R | MC210 - Marshaling 127-C |  | 40d | 2006-07-11 A | 2006-08-16 A | PK000MC21N | 100% |  | 2006-08-28 | 2006-10-20 |  |  |  |  | 2006-07-29 |  |  |  | 0 | 0 | 00 | PK | MC2 | 000 | PK | MC210 | 127C | PE | MC | N | P |  | 50 | 11 | Shipped 16Aug |  |  |  |  |
| PK000MU41S | MU410 - Marshaling 2002-U PKG BOILER |  | 40d | 2006-07-13 A | 2006-08-15 A | PK000MU41K | 100% |  | 2006-07-13 | 2006-09-06 |  |  |  |  | 2006-07-29 |  |  |  | 0 | 0 | 00 | PK | MU4 | 000 | PK | MU410 | 2002U | PE | MU | H | P |  | 225 | 05 | Shipped 16Aug | Should load on ship 09/19/06 and set sail on 09/20/06. |  | X |  |
| PK000MDR | MD405 - Marshaling ISBL DRUMS - 118-F |  | 40d | 2006-07-14 A | 2006-08-16 A | PK000MD4Q | 100% |  | 2006-08-02 | 2006-09-26 |  |  |  |  | 2006-07-29 |  |  |  | 0 | 0 | 00 | PK | MD4 | 000 | PK | MD405 | 118F | CE | MD | H | P |  | 125 | 13 | Shipped 16Aug |  |  |  |  |
| PK000PS00G | 000 SP Items - Fabricate/Exworks |  | 70d | 2006-07-14 A | 2007-01-29 | PK000PS00F | 99% | 1d | 2006-07-31 | 2006-11-03 | 247d | 0d |  |  | 2006-07-29 |  |  |  | 0 | 0 | 00 | PK | P90 | 000 | PK | PS000 |  | IR | P | H | P |  |  |  |  |  |  | N |  |
| PK000I2300 | On/Off Valves - Fabricate/Exworks |  | 130d | 2006-07-17 A | 2007-03-09 | EK000I2305, EK000YA000 FS+5d, PK000I230K FF | 77% | 30d | 2006-07-24 | 2007-01-19 | 460d | 0d | 2007-03-09 |  | 2006-07-29 |  |  |  | 0 | 0 | 00 | PK | I22 | 000 | PK | I2230 |  | IR | I | H | P |  |  |  |  |  |  | N | Copy |
| PK000MB81S | MB810 - Marshaling 102-B |  | 40d | 2006-07-17 A | 2006-08-16 A | PK000MB81K | 100% |  | 2006-07-21 | 2006-09-14 |  |  |  |  | 2006-07-29 |  |  |  | 0 | 0 | 00 | PK | MB8 | 000 | PK | MB810 | 102B | CE | MB | H | P |  | 130 | 13 | Shown Rcv'd at Site 16Sep |  |  | X |  |
| PK000E002G | Transformer - Interim Award |  | 5d | 2006-07-18 A | 2006-08-02 A | PK000E002E, EK000EB015, EK020EL125, EK000YA000 FF+5d | 100% |  | 2006-07-31 | 2006-08-04 |  |  |  |  | 2006-07-29 | 3 | 5 | 7 | 0 | 4.5 | 00 | PK | EF5 | 000 | PK | E0002 |  |  | E | G | P | 03 |  |  |  |  |  |  |  |
| PK000MD45B | MD405 - Marshaling ISBL DRUMS - 115-F |  | 40d | 2006-07-18 A | 2006-08-16 A | PK000MD45A | 100% |  | 2006-08-02 | 2006-09-26 |  |  |  |  | 2006-07-29 |  |  |  | 0 | 0 | 00 | PK | MD4 | 000 | PK | MD405 | 115F | CE | MD | H | P |  | 125 | 13 | Shipped 16Aug |  |  |  |  |
| PK000E002K | Transformer - Formal Award |  | 10d | 2006-07-21 A | 2006-08-02 A | PK000E002G, EK000EB015, EK000YA000 FF+5d | 100% |  | 2006-08-07 | 2006-08-18 |  |  |  |  | 2006-07-29 | 8 | 10 | 12 | 0 | 0 | 00 | PK | EF5 | 000 | PK | E0002 |  |  | E | K | P | 03 |  |  |  |  |  |  |  |
| PK000E002H | Transformer - Fab / Exworks |  | 150d | 2006-07-24 A | 2007-03-06 | PK000E002G, PK000E002K FF | 82% | 27d | 2006-08-07 | 2007-03-02 | 28d | 0d | 2007-03-06 |  | 2006-07-29 | 120 | 150 | 180 | 0 | 1.4 | 00 | PK | EF5 | 000 | PK | E0002 |  |  | E | H | P | 03 |  |  |  |  |  |  |  |
| PK000MBP4T | MB312 - Shop Recv. 101-B Radiant Cast Stringer Grids |  | 10d | 2006-07-24 A | 2006-07-28 A | PK000MBP4O | 100% |  | 2006-08-15 | 2006-08-28 |  |  |  |  | 2006-07-29 |  |  |  | 0 | 0 | 00 | PK | MB3 | 000 | PK | MB312 | 101B | CE | MB | N | P |  | 10 | 04 |  |  |  |  |  |
| PK000MBP4U | MB312 - Shop Recv. 101-B Radiant Cast Tube/Riser/Manifold |  | 10d | 2006-07-24 A | 2006-07-28 A | PK000MBP4S | 100% |  | 2006-08-14 | 2006-08-25 |  |  |  |  | 2006-07-29 |  |  |  | 0 | 0 | 00 | PK | MB3 | 000 | PK | MB312 | 101B | CE | MB | N | P |  | 10 | 04 |  |  |  |  |  |
| PK000PIA4I | Product Line Piping - Insulation Fab/Exworks |  | 30d | 2006-07-25 A | 2006-08-31 A | PK000PIA4F, PK000PIA4H FS+5d | 100% |  | 2007-04-03 | 2007-05-14 |  |  |  |  | 2006-07-29 | 40 | 50 | 55 | 0 | 1.3 | 00 | PK | P00 | 000 | PK | PIA41 |  |  | P | H | P | 02 | 30 | 01 |  |  |  |  |  |
| PK000PIA1L | Bulk Piping A/G - Transport / Delivery (CROME) |  | 50d | 2006-07-26 A | 2006-10-31 A | PK000PIA1K | 100% |  | 2006-07-26 | 2006-10-03 |  |  |  |  | 2006-07-29 | 40 | 50 | 55 | 0 | 0 | 00 | PK | P00 | 000 | PK | PIA11 |  |  | P | N | P | 02 | 50 | 01 |  |  |  |  |  |
| PK000E004E | UPS System - Eval Bids/Issue Recmd |  | 15d | 2006-07-31 A | 2006-08-07 A | EK000E004D, PK000E00C | 100% |  | 2006-07-17 | 2006-08-04 |  |  |  |  | 2006-07-29 | 10 | 15 | 20 | 7.6 | 1.4 | 00 | PK | EF6 | 000 | PK | E0004 |  |  | E | E | P | 03 |  |  |  |  |  |  |  |
| PK000MC23B | MC230 - Marshaling 106-C & 109-C |  | 40d | 2006-08-01 A | 2006-08-16 A | PK000MC23A | 100% |  | 2006-08-21 | 2006-10-13 |  |  |  |  | 2006-07-29 |  |  |  | 0 | 0 | 00 | PK | MC2 | 000 | PK | MC230 |  | PE | MC | H | P |  | 175 | 13 | Shipped 16Aug |  |  |  |  |
| PK000MC61S | MC610 - Marshaling DBL PIPE EXCH 188-CA |  | 40d | 2006-08-01 A | 2006-08-16 A | PK000MC61K, PK000MC61L | 100% |  | 2006-08-07 | 2006-09-29 |  |  |  |  | 2006-07-29 |  |  |  | 0 | 0 | 00 | PK | MC6 | 000 | PK | MC610 | 188CA | PE | MC | H | P |  | 160 | 13 | Shipped 16Aug |  |  | X |  |
| PK000PIA4K | Product Line Piping - Transport / Delivery |  | 50d | 2006-08-01 A | 2006-08-31 A | PK000PIA4I | 100% |  | 2007-06-12 | 2007-08-20 |  |  |  |  | 2006-07-29 | 40 | 50 | 55 | 0 | 2.1 | 00 | PK | U40 | 000 | PK |  |  |  | U | N | P | 02 | 50 | 01 |  |  |  |  |  |
| PK010I1241 | Rotameters - Transport & Deliver |  | 50d | 2006-08-01 A | 2007-02-13 | PK010I1240 | 76% | 12d | 2006-08-01 | 2006-10-09 | 523d | 0d |  |  | 2006-07-29 |  |  |  | 0 | 0 | 00 | PK | I21 | 000 | PK | I2124 |  | IR | I | N | P |  |  |  |  |  |  | N |  |
| PK000I1103 | 020 Orific Plates - Transport & Deliver |  | 50d | 2006-08-02 A | 2006-12-07 A | PK000I1100 | 100% |  | 2006-08-03 | 2006-10-11 |  |  |  |  | 2006-07-29 |  |  |  | 0 | 0 | 00 | PK | I21 | 000 | PK | I2110 |  | IR | I | N | P |  |  |  |  |  |  | N | Copy |
| PK000MBP5C | MB221 - Marshaling 101-B Radiant Steel Panels |  | 40d | 2006-08-02 A | 2006-08-16 A | PK000MBP1K | 100% |  | 2006-10-02 | 2006-11-24 |  |  |  |  | 2006-07-29 |  |  |  | 0 | 0 | 00 | PK | MB2 | 000 | PK | MB221 | 101B | CE | MB | H | P |  | 140 | 04 | Shipped 11Nov |  |  | X |  |
| PK000MJ37S | MJ340 - Marshaling METERING PUMPS |  | 40d | 2006-08-02 A | 2006-09-07 A | PK000MJ37K | 100% |  | 2006-10-02 | 2006-11-24 |  |  |  |  | 2006-07-29 |  |  |  | 0 | 0 | 00 | PK | MJ3 | 000 | PK | MJ340 |  | NE | MJ | H | P |  | 140 | 13 | Shipped 08Sep |  |  |  |  |
| PK000PIA4L | Product Line Piping - Fab/Exworks Remaining +/- 1500 Mts. |  | 130d | 2006-08-02 A | 2006-11-28 A | PK000PIA4G | 100% |  | 2005-10-31 | 2006-05-02 |  |  |  |  | 2006-07-29 | 120 | 130 | 140 | 0 | 7.1 | 00 | PK | P00 | 000 | PK | PIA41 |  |  | P | H | P | 02 | 30 | 01 |  |  |  |  |  |
| PK010I1103 | 010 Orific Plates - Transport & Deliver |  | 50d | 2006-08-03 A | 2006-12-07 A | PK010I1100 | 100% |  | 2006-08-03 | 2006-10-11 |  |  |  |  | 2006-07-29 |  |  |  | 0 | 0 | 00 | PK | I21 | 000 | PK | I2110 |  | IR | I | N | P |  |  |  |  |  |  | N |  |
| PK000E004G | UPS System - Interim Award |  | 5d | 2006-08-07 A | 2006-08-17 A | PK000E004E, EK000EB015, EK020EL125, EK000YA000 FF+5d | 100% |  | 2006-07-31 | 2006-08-04 |  |  |  |  | 2006-07-29 | 3 | 5 | 8 | 7.6 | 0.1 | 00 | PK | EF6 | 000 | PK | E0004 |  |  | E | G | P | 03 |  |  |  |  |  |  |  |
| PK000MB69S | MB691 - Marshaling 101-B for MB691 |  | 40d | 2006-08-07 A | 2006-09-07 A | PK000MB69K | 100% |  | 2006-08-14 | 2006-10-06 |  |  |  |  | 2006-07-29 |  |  |  | 0 | 0 | 00 | PK | MB6 | 000 | PK | MB691 | 101B | CE | MB | H | P |  | 130 |  | Shown Rcv'd at Site 11Dec |  |  |  |  |

Notes:
- PK000MU61O: P3 Activity Log Info: Includes Ship to Dock; Load; Sea Freight; / Unload Customs; Ship to Site
- ZZ1040: P3 Activity Log Info: Includes Ship to Dock; Load; Sea Freight; / Unload Customs; Ship to Site
- PK000MC21R: P3 Activity Log Info: Includes Ship to Dock; Load; Marshalling Sea / Freight; UnloadCustoms; Ship to Site

| ID | Activity | Type | Duration | Start | Finish | Predecessors | Complete | Remaining | Planned start | Planned finish | Total float | Free float | Constraint | Expected finish | Calendar | zData Date | PCA Criticality Index | PCA Duration Sensitivity | EB02 - UNIT | EB01 - RESP | EB06 - WORK OP | EB03 - AREA | EB05 - DISCIPLINE | EB07 - REQN | EB10 - KEY | EB04 - CLASS | EB11 - FLAG | EB09 - IPMS | EB00 - EPC | EB18 - Grouping | zComments | user_integer2 | EB08 - TAG | EB14 - RISK | Optimistic Duration | Most Likely Duration | Pessimistic Duration | EB21 - Rev 2 Risk Associations | user_integer1 |
| --- | --- | --- | --- | --- | --- | --- | --- | --- | --- | --- | --- | --- | --- | --- | --- | --- | --- | --- | --- | --- | --- | --- | --- | --- | --- | --- | --- | --- | --- | --- | --- | --- | --- | --- | --- | --- | --- | --- | --- |
| PK000I1162 | 020 Wedge Flow Meters - Transport & Deliver |  | 50d | 2006-08-08 A | 2006-10-13 A | PK000I1161 | 100% |  | 2006-10-16 | 2006-12-22 |  |  |  |  |  | 2006-07-29 | 0 | 0 | 00 | PK | I21 | 000 | PK | I2116 | IR | I | N | N | P | Copy |  |  |  |  |  |  |  |  |  |
| PK000MB64S | MB640 - Marshaling 101-B Springs & Hangers |  | 40d | 2006-08-08 A | 2006-08-16 A | PK000MB64K | 100% |  | 2006-08-07 | 2006-09-29 |  |  |  |  |  | 2006-07-29 | 0 | 0 | 00 | PK | MB6 | 000 | PK | MB640 | CE | MB |  | H | P |  | Shipped 16Aug | 130 | 101B |  |  |  |  |  |  |
| PK000MD46U | MD411 - Marshaling OSBL DRUMS - 2006-F |  | 40d | 2006-08-08 A | 2006-11-09 A | PK000MD46T | 100% |  | 2006-08-14 | 2006-10-06 |  |  |  |  |  | 2006-07-29 | 0 | 0 | 00 | PK | MD4 | 000 | PK | MD411 | PE | MD |  | H | P |  | Shipped 11Nov | 125 | 2006F | 13 |  |  |  |  |  |
| PK000MD51S | MD501 - Marshaling 107-D |  | 40d | 2006-08-08 A | 2006-11-09 A | PK000MD51K | 100% |  | 2006-08-14 | 2006-10-06 |  |  |  |  |  | 2006-07-29 | 0 | 0 | 00 | PK | MD5 | 000 | PK | MD501 | CE | MD | X | H | P |  | Shipped 11Nov | 160 | 107D | 13 |  |  |  |  |  |
| PK000I1221 | Coriolis Meters - Transport & Deliver |  | 50d | 2006-08-16 A | 2006-08-16 A | PK000I1220 | 100% |  | 2007-01-16 | 2007-03-26 |  |  |  |  |  | 2006-07-29 | 0 | 0 | 00 | PK | I21 | 000 | PK | I2122 | IR | I | N | N | P | Copy |  |  |  |  |  |  |  |  |  |
| PK000MB21O | Transport & Deliver of Equip. 101-B Siding |  | 50d | 2006-08-16 A | 2006-09-14 A | PK000MB21F | 100% |  | 2006-09-04 | 2006-11-10 |  |  |  |  |  | 2006-07-29 | 0 | 0 | 00 | PK | MB2 | 000 | PK | MB212 | CE | MB |  | N | P |  |  | 50 | 101B |  |  |  |  |  |  |
| PK000MB61O | Transport & Deliver 101-B Burners |  | 50d | 2006-08-16 A | 2006-09-14 A | PK000MB61K, PK000MB61L | 100% |  | 2006-09-04 | 2006-11-10 |  |  |  |  |  | 2006-07-29 | 0 | 0 | 00 | PK | MB6 | 000 | PK | MB610 | CE | MB |  | N | P |  |  | 50 | 101BA |  |  |  |  |  |  |
| PK000MB63O | MB630 - Transport/Customes 101-B Air Preheater |  | 25d | 2006-08-16 A | 2006-09-14 A | PK000MB83S | 100% |  | 2006-09-04 | 2006-10-06 |  |  |  |  |  | 2006-07-29 | 0 | 0 | 00 | PK | MB6 | 000 | PK | MB630 | CE | MB |  | N | P |  |  | 45 | 101BL1 | 04 |  |  |  |  |  |
| PK000MB64O | MB640 - Transport/Customes 101-B Springs & Hangers |  | 30d | 2006-08-16 A | 2006-09-14 A | PK000MB64S | 100% |  | 2006-10-02 | 2006-11-10 |  |  |  |  |  | 2006-07-29 | 0 | 0 | 00 | PK | MB6 | 000 | PK | MB640 | CE | MB |  | N | P |  |  | 50 | 101B |  |  |  |  |  |  |
| PK000MB65O | MB622 - Transport/Customes 101-B Penthouse Circ Fans |  | 30d | 2006-08-16 A | 2006-09-14 A | PK000MB65S | 100% |  | 2006-09-04 | 2006-10-13 |  |  |  |  |  | 2006-07-29 | 0 | 0 | 00 | PK | MB6 | 000 | PK | MB622 | CE | MB |  | N | P |  |  | 50 | 101B |  |  |  |  |  |  |
| PK000MB68O | MB692 - Transport/Customes 101-B Cat Vacuum Equip. |  | 30d | 2006-08-16 A | 2006-09-14 A | PK000MB68S | 100% |  | 2006-09-04 | 2006-10-13 |  |  |  |  |  | 2006-07-29 | 0 | 0.4 | 00 | PK | MB6 | 000 | PK | MB692 | CE | MB |  | N | P |  |  | 50 | 101B |  | 25 | 30 | 40 | 03 |  |
| PK000MB81O | MB810 - Transport & Deliver of Equip. 101-B |  | 30d | 2006-08-16 A | 2006-09-14 A | PK000MB81S | 100% |  | 2006-08-07 | 2006-09-15 |  |  |  |  |  | 2006-07-29 | 0 | 0 | 00 | PK | MB8 | 000 | PK | MB810 | CE | MB |  | N | P |  |  | 50 | 101B | 11 |  |  |  |  |  |
| PK000MBP1M | MB221 - Transport/Customes 101-B Radiant Steel Panels |  | 30d | 2006-08-16 A | 2006-09-16 A | PK000MBP5C | 100% |  | 2006-11-27 | 2007-01-05 |  |  |  |  |  | 2006-07-29 | 0 | 0 | 00 | PK | MB2 | 000 | PK | MB221 | CE | MB |  | N | P |  |  | 50 | 101B | 04 |  |  |  |  |  |
| PK000MC21T | MC210 - Transport/Customes 127-C |  | 30d | 2006-08-16 A | 2006-09-14 A | PK000MC21R | 100% |  | 2006-09-05 | 2006-10-16 |  |  |  |  |  | 2006-07-29 | 0 | 0 | 00 | PK | MC2 | 000 | PK | MC210 | PE | MC |  | N | P |  |  | 50 | 127C | 11 |  |  |  |  |  |
| PK000MC23C | MC230 - Transport/Customes 106-C & 109-C |  | 30d | 2006-08-16 A | 2006-09-14 A | PK000MC23B | 100% |  | 2006-10-16 | 2006-11-24 |  |  |  |  |  | 2006-07-29 | 0 | 0 | 00 | PK | MC2 | 000 | PK | MC230 | PE | MC |  | N | P |  |  | 50 |  | 11 |  |  |  |  |  |
| PK000MC61O | MC610 - Transport/Customes DBL PIPE EXCH 188-CA |  | 30d | 2006-08-16 A | 2006-09-14 A | PK000MC61S | 100% |  | 2006-09-26 | 2006-11-06 |  |  |  |  |  | 2006-07-29 | 0 | 0 | 00 | PK | MC6 | 000 | PK | MC610 | PE | MC |  | N | P |  |  | 50 | 188CA | 11 |  |  |  |  |  |
| PK000MC61Q | MC610 - Transport/Customes DBL PIPE EXCH 161-C |  | 30d | 2006-08-16 A | 2006-09-14 A | PK000MC61F | 100% |  | 2006-08-21 | 2006-09-29 |  |  |  |  |  | 2006-07-29 | 0 | 0 | 00 | PK | MC6 | 000 | PK | MC610 | PE | MC |  | N | P |  |  | 50 | 161C | 11 |  |  |  |  |  |
| PK000MD22O | MD202 - Transport/Customes TOWERS 103/105-E |  | 30d | 2006-08-16 A | 2006-09-14 A | PK000MD22S | 100% |  | 2006-09-04 | 2006-10-13 |  |  |  |  |  | 2006-07-29 | 0 | 0 | 00 | PK | MD2 | 000 | PK | MD202 | FE | MD |  | N | P |  |  | 50 |  | 11 |  |  |  |  |  |
| PK000MD42B | MD402 - Transport/Customes 144-F |  | 30d | 2006-08-16 A | 2006-09-14 A | PK000MD42A | 100% |  | 2006-09-11 | 2006-10-20 |  |  |  |  |  | 2006-07-29 | 0 | 0 | 00 | PK | MD4 | 000 | PK | MD402 | CE | MD |  | N | P |  |  | 50 | 144F | 11 |  |  |  |  |  |
| PK000MD42R | MD402 - Transport/Customes 104-F |  | 30d | 2006-08-16 A | 2006-09-14 A | PK000MD42T | 100% |  | 2006-10-24 | 2006-12-04 |  |  |  |  |  | 2006-07-29 | 0 | 0 | 00 | PK | MD4 | 000 | PK | MD402 | CE | MD |  | N | P |  |  | 50 | 104F | 11 |  |  |  |  |  |
| PK000MD44N | MD404 - Transport/Customes 107-F |  | 30d | 2006-08-16 A | 2006-09-14 A | PK000MD44S, PK000MD44M | 100% |  | 2006-09-11 | 2006-10-20 |  |  |  |  |  | 2006-07-29 | 0 | 0 | 00 | PK | MD4 | 000 | PK | MD404 | NE | MD |  | N | P |  |  | 50 |  | 11 |  |  |  |  |  |
| PK000MD44O | MD404 - Transport/Customes 109-F |  | 30d | 2006-08-16 A | 2006-09-14 A | PK000MD44S | 100% |  | 2006-09-11 | 2006-10-20 |  |  |  |  |  | 2006-07-29 | 0 | 0 | 00 | PK | MD4 | 000 | PK | MD404 | NE | MD |  | N | P |  |  | 50 |  | 11 |  |  |  |  |  |
| PK000MD45C | MD405 - Transport/Customes ISBL DRUMS - 115-F |  | 30d | 2006-08-16 A | 2006-09-14 A | PK000MD45B | 100% |  | 2006-10-24 | 2006-12-04 |  |  |  |  |  | 2006-07-29 | 0 | 0 | 00 | PK | MD4 | 000 | PK | MD405 | CE | MD |  | N | P |  |  | 50 | 115F | 11 |  |  |  |  |  |
| PK000MD45O | MD405 - Transport/Customes ISBL DRUMS - 156-F & 157-F |  | 30d | 2006-08-16 A | 2006-09-14 A | PK000MD45S | 100% |  | 2006-09-01 | 2006-10-12 |  |  |  |  |  | 2006-07-29 | 0 | 0 | 00 | PK | MD4 | 000 | PK | MD405 | CE | MD |  | N | P |  |  | 50 |  | 11 |  |  |  |  |  |
| PK000MD45T | MD405 - Transport/Customes ISBL DRUMS - 118-F |  | 30d | 2006-08-16 A | 2006-09-14 A | PK000MDR | 100% |  | 2006-08-31 | 2006-10-11 |  |  |  |  |  | 2006-07-29 | 0 | 0 | 00 | PK | MD4 | 000 | PK | MD405 | CE | MD |  | N | P |  |  | 50 | 118F | 11 |  |  |  |  |  |
| PK000MD46O | MD411 - Transport/Customes OSBL DRUMS - 2203-F & 2204-F |  | 30d | 2006-08-16 A | 2006-09-14 A | PK000MD46S | 100% |  | 2006-08-21 | 2006-09-29 |  |  |  |  |  | 2006-07-29 | 0 | 0 | 00 | PK | MD4 | 000 | PK | MD411 | PE | MD |  | N | P |  |  | 50 |  | 11 |  |  |  |  |  |
| PK000MD47O | MD406 - Transport/DCustomes ISBL DRUMS |  | 30d | 2006-08-16 A | 2006-09-14 A | PK000MD47S | 100% |  | 2006-10-02 | 2006-11-10 |  |  |  |  |  | 2006-07-29 | 0 | 0 | 00 | PK | MD4 | 000 | PK | MD406 | CE | MD |  | N | P |  |  | 50 | 103F | 11 |  |  |  |  |  |
| PK000MJ75O | MJ750 - Transport/Customes SURFACE CONDENSORS |  | 30d | 2006-08-16 A | 2006-09-16 A | PK000MJ75S | 100% |  | 2006-11-06 | 2006-12-15 |  |  |  |  |  | 2006-07-29 | 0 | 0 | 00 | PK | MJ7 | 000 | PK | MJ750 | PE | MJ |  | N | P |  |  | 50 |  | 11 |  |  |  |  |  |
| PK000ML42O | ML420 - Transpor/Customes CARTRIDGE FILTERS |  | 30d | 2006-08-16 A | 2006-09-14 A | PK000ML42S | 100% |  | 2006-09-04 | 2006-10-13 |  |  |  |  |  | 2006-07-29 | 0 | 0 | 00 | PK | ML4 | 000 | PK | ML420 | NE | ML |  | N | P |  |  | 50 |  | 11 |  |  |  |  |  |
| PK000ML43O | ML430 - Transport/Customes 110-L BENFIELD MIXER |  | 30d | 2006-08-16 A | 2006-09-14 A | PK000ML43S | 100% |  | 2006-09-04 | 2006-10-13 |  |  |  |  |  | 2006-07-29 | 0 | 0 | 00 | PK | ML4 | 000 | PK | ML430 | NE | ML |  | N | P |  |  | 50 | 110L | 11 |  |  |  |  |  |
| PK000MU35O | MU350 - Transport/Customes 101-U DEAERATOR |  | 30d | 2006-08-16 A | 2006-09-14 A | PK000MU35S | 100% |  | 2006-08-21 | 2006-09-29 |  |  |  |  |  | 2006-07-29 | 0 | 0 | 00 | PK | MU3 | 000 | PK | MU350 | FE | MU |  | N | P |  |  | 50 | 101U | 11 |  |  |  |  |  |
| PK000MU41O | MU410 - Transport/Customes 2002-U PKG BOILER |  | 30d | 2006-08-16 A | 2006-09-26 A | PK000MU41S | 100% |  |  |  |  |  |  |  |  | 2006-07-29 | 0 | 0 | 00 | PK | MU4 | 000 | PK | MU410 | PE | MU |  | N | P |  |  | 50 | 2002U | 05 |  |  |  |  |  |
| PK000E004H | UPS System - Fab / Exworks |  | 150d | 2006-08-17 A | 2007-03-07 | PK000E004G, PK000E004K FF | 81% | 28d | 2006-08-10 | 2007-03-07 | 27d | 0d |  | 2007-03-07 |  | 2006-07-29 | 7.6 | 5.2 | 00 | PK | EF6 | 000 | PK | E0004 |  | E |  | H | P |  |  |  |  |  | 130 | 150 | 190 | 03 |  |
| PK000E004K | UPS System - Formal Award |  | 10d | 2006-08-17 A | 2006-08-17 A | PK000E004G, EK000EB015, EK000YA000 FF+5d | 100% |  | 2006-08-10 | 2006-08-23 |  |  |  |  |  | 2006-07-29 | 0 | 0 | 00 | PK | EF6 | 000 | PK | E0004 |  | E |  | K | P |  |  |  |  |  | 5 | 10 | 12 | 03 |  |
| PK000PIA4J | Product Line Piping - Receive at Site | milestone | 0d | 2006-08-31 A | 2006-08-31 A | PK000PIA4K, CK000YA306 | 100% |  | 2007-08-20 | 2007-08-20 |  |  |  |  | EBWK 6 Day Egypt Holidays | 2006-07-29 | 0 | 0 | 00 | PK | P00 | 000 | PK | PIA41 |  | P |  | L | P |  |  | 0 |  |  |  |  |  |  |  |
| PK000I3542 | ITCC - Software Programming by Vendor |  | 100d | 2006-09-04 A | 2006-10-23 A | PK000I354K, EM02ASY172 FF, EK000I354M, EK000I3542 | 100% |  | 2006-09-04 | 2007-01-19 |  |  |  |  |  | 2006-07-29 | 0 | 0 | 00 | PK | I35 | 000 | IC | I3542 |  | I |  |  | E |  |  | 90 |  | 02 |  |  |  |  |  |
| PK000I621H | Fabricate / Exworks - Temperature Elements |  | 71d | 2006-09-05 A | 2007-04-12 | EK000I621A FS+40d, PK000I621K | 24% | 54d | 2006-08-04 | 2006-11-10 | 31d | 0d |  | 2007-04-12 |  | 2006-07-29 | 0 | 0 | 00 | PK | I16 | 000 | PK | I1621 |  | I |  | H | P |  |  |  |  |  |  |  |  |  |  |
| PK000MB69O | MB691 - Transport/Customes of Equip. 101-B |  | 30d | 2006-09-07 A | 2006-12-11 A | PK000MB69S | 100% |  | 2006-09-07 | 2006-10-18 |  |  |  |  |  | 2006-07-29 | 0 | 0 | 00 | PK | MB6 | 000 | PK | MB691 | CE | MB |  | N | P |  |  | 50 | 101B |  |  |  |  |  |  |
| PK000MJ37O | MJ340 - Transport/Customes METERING PUMPS |  | 30d | 2006-09-08 A | 2006-11-07 A | PK000MJ37S | 100% |  | 2006-11-06 | 2006-12-15 |  |  |  |  |  | 2006-07-29 | 0 | 0 | 00 | PK | MJ3 | 000 | PK | MJ340 | NE | MJ |  | N | P |  |  |  |  |  |  |  |  |  |  |
| PK000ML51O | ML512 - Transport/Customs 2102-L LOADING ARM |  | 30d | 2006-09-08 A | 2006-11-01 A | PK000ML51S | 100% |  | 2006-10-31 | 2006-12-11 |  |  |  |  |  | 2006-07-29 | 0 | 0 | 00 | PK | ML5 | 000 | PK | ML512 | FE | ML |  | N | P |  |  |  | 2102L |  |  |  |  |  |  |
| PK000MBP1T | MB221 - Fab/PO Promise 101-B Crossover Pipe |  | 140d | 2006-09-11 A | 2006-10-27 A | PK000MBP3V, PK000MBP3W | 100% |  | 2006-09-11 | 2007-03-23 |  |  |  |  |  | 2006-07-29 | 0 | 0 | 00 | PK | MB2 | 000 | PK | MB221 | CE | MB |  | H | P |  |  | 140 | 101B | 04 |  |  |  |  |  |
| PK000ML33S | ML330 - Marshaling 2101-L |  | 40d | 2006-09-12 A | 2006-11-10 A | PK000ML33K | 100% |  | 2006-09-12 | 2006-11-06 |  |  |  |  |  | 2006-07-29 | 0 | 0 | 00 | PK | ML3 | 000 | PK | ML330 | NE | ML |  | H | P |  | Shipped 11Nov | 170 | 2101L | 13 |  |  |  |  |  |
| PK000I1121 | 020 Venturis - Fabricate/Exworks |  | 55d | 2006-09-13 A | 2007-01-29 | EK000I1122 FS+40d, PK000I112K, EK000YA000 | 98% | 1d | 2006-09-13 | 2006-11-28 | 509d | 0d |  |  |  | 2006-07-29 | 0 | 0 | 00 | PK | I21 | 000 | PK | I2112 | IR | I | N | H | P | Copy |  |  |  |  |  |  |  |  |  |
| PK000MJ21S | MJ202 - Marshaling 102/3/5-J |  | 40d | 2006-09-15 A | 2006-11-30 A | PK000MJ21K | 100% |  | 2006-10-02 | 2006-11-24 |  |  |  |  |  | 2006-07-29 | 0 | 0 | 00 | PK | MJ2 | 000 | PK | MJ202 | CE | MJ | X | H | P |  | Foreign Ship, Rcv'd at Site | 320 |  | 06 |  |  |  |  |  |
| PK000E001H | Sub Stations - Fab / Exworks |  | 150d | 2006-09-18 A | 2007-03-30 | PK000E001G, PK000E001K FF | 70% | 45d | 2006-09-18 | 2007-04-13 | 62d | 0d |  | 2007-03-30 |  | 2006-07-29 | 0 | 0 | 00 | PK | EF1 | 000 | PK | E0001 |  | E | CD | H | P |  |  |  |  |  | 170 | 175 | 185 | 03 | 150 |
| PK000I616N | Transport & Deliver - Steam Drum Lvl Gauges |  | 50d | 2006-09-18 A | 2007-01-10 A | PK000I616H | 100% |  | 2006-09-18 | 2006-11-24 |  |  | start on or after 2006-10-30 |  |  | 2006-07-29 | 0 | 0 | 00 | PK | I16 | 000 | PK | I1616 |  | I |  | N | P |  |  |  |  |  |  |  |  |  |  |
| PK000MU29S | MU292 - Marshaling 2404-L |  | 40d | 2006-09-18 A | 2007-03-09 | PK000MU29K | 25% | 30d | 2006-09-18 | 2006-11-10 | 195d | 0d |  | 2007-03-09 |  | 2006-07-29 | 0 | 0 | 00 | PK | MU2 | 000 | PK | MU292 | NE | MU |  | H | P |  | Plan to ship Mar (tenitive) | 120 | 2404L | 13 | 30 | 40 | 45 | 03 |  |
| PK010IC214 | 010 Control Valves - Transport & Deliver |  | 50d | 2006-09-27 A | 2007-01-29 | PK010IC210 FS+4d | 100% | 0d | 2006-09-27 | 2006-12-05 | 535d | 0d |  | 2007-01-26 |  | 2006-07-29 | 0 | 0 | 00 | PK | I22 | 000 | PK | I2210 | IR | I | N | N | P |  |  |  |  |  |  |  |  |  |  |
| PK000MB66S | MB660 - Marshaling 101-B Dampers & Air Doors |  | 40d | 2006-09-28 A | 2006-09-28 A | PK000MB66K | 100% |  | 2006-09-29 | 2006-11-23 |  |  |  |  |  | 2006-07-29 | 0 | 0 | 00 | PK | MB6 | 000 | PK | MB660 | CE | MB |  | H | P |  | Plan to ship Jan (tenitive) | 130 | 101B |  |  |  |  |  |  |
| PK020I131H | Fabricate / Exworks - Transmitters -Press. |  | 62d | 2006-09-28 A | 2006-12-28 A | EK020I131A FS+40d, PK000I131K | 100% |  | 2006-09-28 | 2006-12-22 |  |  |  |  |  | 2006-07-29 | 0 | 0 | 00 | PK | I13 | 000 | PK | I1310 |  | I |  | H | P |  |  |  |  |  |  |  |  |  |  |
| PK030I131H | Fabricate / Exworks - Transmitters - Temp. |  | 62d | 2006-09-28 A | 2007-02-15 | EK030I131A FS+40d, PK000I131K | 77% | 14d | 2006-09-28 | 2006-12-22 | 71d | 0d | start on or after 2006-12-11 | 2007-02-15 |  | 2006-07-29 | 0 | 0 | 00 | PK | I13 | 000 | PK | I1310 |  | I |  | H | P |  |  |  |  |  |  |  |  |  |  |
| PK000MB66O | MB660 - Transport/Customes 101-B Dampers & Air Doors |  | 30d | 2006-09-29 A | 2006-12-08 A | PK000MB66S | 100% |  | 2006-09-29 | 2006-11-09 |  |  |  |  |  | 2006-07-29 | 0 | 0 | 00 | PK | MB6 | 000 | PK | MB660 | CE | MB |  | N | P |  |  | 50 | 101B |  |  |  |  |  |  |
| PK000MC21S | MC210 - Marshaling 110/115/124/128/130/133/134/160/167/173/174-C |  | 40d | 2006-10-02 A | 2006-11-09 A | PK000MC21K | 100% |  | 2006-10-24 | 2006-12-18 |  |  |  |  |  | 2006-07-29 | 0 | 0 | 00 | PK | MC2 | 000 | PK | MC210 | PE | MC |  | N | P |  | Shipped 11Nov | 50 |  | 11 |  |  |  |  |  |
| PK000MD22B | MD202 - Marshaling TOWERS 104-E |  | 40d | 2006-10-02 A | 2006-11-10 A | PK000MD22A | 100% |  | 2006-11-01 | 2006-12-26 |  |  |  |  |  | 2006-07-29 | 0 | 0 | 00 | PK | MD2 | 000 | PK | MD202 | FE | MD |  | H | P |  | Shipped 11Nov | 160 | 104E | 13 |  |  |  |  |  |
| PK000MU21S | MU221 - Marshaling LIFT STATION |  | 40d | 2006-10-03 A | 2006-12-12 A | PK000MU21K | 100% |  | 2006-10-03 | 2006-11-27 |  |  |  |  |  | 2006-07-29 | 0 | 0 | 00 | PK | MU2 | 01E | PK | MU221 | NE | MU |  | H | P |  | Shipped 11Nov | 100 | 2402L | 13 |  |  |  |  |  |
| PK000MU22S | MU222 - Marshaling 2401-U |  | 40d | 2006-10-03 A | 2006-11-09 A | PK000MU22K | 100% |  | 2006-10-03 | 2006-11-27 |  |  |  |  |  | 2006-07-29 | 0 | 0 | 00 | PK | MU2 | 000 | PK | MU222 | NE | MU |  | H | P |  | Shipped 11Nov | 100 | 2401U | 13 |  |  |  |  |  |
| PK000MC23S | MC230 - Marshaling 105/172/183-C |  | 40d | 2006-10-16 A | 2006-11-09 A | PK000MC23K | 100% |  | 2006-11-22 | 2007-01-16 |  |  |  |  |  | 2006-07-29 | 0 | 0 | 00 | PK | MC2 | 000 | PK | MC230 | PE | MC |  | H | P |  | Shipped 11Nov (w/o 107) | 175 |  | 13 |  |  |  |  |  |
| PK000MBP3C | MB221 - Marshaling 101-B Radiant Ducting |  | 40d | 2006-10-17 A | 2006-11-09 A | PK000MBP1S | 100% |  | 2006-10-17 | 2006-12-11 |  |  | start on or after 2006-12-13 |  |  | 2006-07-29 | 0 | 0 | 00 | PK | MB2 | 000 | PK | MB221 | CE | MB |  | H | P |  | Shipped 11Nov | 130 | 101B | 04 |  |  |  |  |  |
| PK000I611H | Fabricate / Exworks - Pressure Gauges - ISBL |  | 50d | 2006-10-19 A | 2006-12-19 A | EK000I611A FS+40d, PK000I611K | 100% |  | 2006-10-19 | 2006-12-27 |  |  |  |  |  | 2006-07-29 | 0 | 0 | 00 | PK | I16 | 000 | PK | I1611 |  | I |  | H | P |  |  |  |  |  |  |  |  |  |  |
| PK010E008G | 540-SG Admin. Area Pwr Supply - Interim Award |  | 5d | 2006-10-19 A | 2006-10-25 A | PK010E008F | 100% |  |  |  |  |  |  |  |  | 2006-07-29 | 0 | 0 | 00 | PK | EF5 | 000 | PK | E0008 |  | E |  | G | P |  |  |  |  |  | 4 | 5 | 8 | 03 |  |
| PK000I3522 | SIS - FAT Test |  | 10d | 2006-10-24 A | 2006-11-17 A | EK000I3523, PK000I352H | 100% |  | 2006-10-30 | 2006-11-10 |  |  |  |  |  | 2006-07-29 | 0 | 0 | 00 | PK | I35 | 000 | IC | I3520 |  | I |  |  | E |  |  | 10 |  | 02 |  |  |  |  |  |
| PK010E008H | 540-SG Admin. Area Pwr Supply - Formal Award |  | 10d | 2006-10-25 A | 2006-10-25 A | PK010E008G | 100% |  | 2007-01-29 | 2007-02-12 |  |  |  |  |  | 2006-07-29 | 0 | 0 | 00 | PK | EF5 | 000 | PK | E0008 |  | E |  | K | P |  |  |  |  |  | 5 | 10 | 12 | 03 |  |
| PK010E008K | 540-SG Admin. Area Pwr Supply - Fab / Exworks |  | 100d | 2006-10-26 A | 2007-03-13 | PK010E008G, PK010E008H FF, PK010E008L FF+20d | 68% | 32d | 2006-10-26 | 2007-03-14 | 70d | 0d |  | 2007-03-13 |  | 2006-07-29 | 0 | 0 | 00 | PK | EF5 | 000 | PK | E0008 |  | E | CD | H | P |  |  |  |  |  | 130 | 150 | 180 | 03 | 100 |
| PK000I3543 | ITCC - FAT Test |  | 10d | 2006-10-30 A | 2006-11-22 A | PK000I3542, PK000I354H | 100% |  | 2006-10-23 | 2006-11-03 |  |  |  |  |  | 2006-07-29 | 0 | 0 | 00 | PK | I35 | 000 | IC | I3542 |  | I |  |  | E |  |  | 10 |  | 02 |  |  |  |  |  |
| PK000MBP1C | MB221 - Marshaling 101-B Convection Modules |  | 40d | 2006-10-30 A | 2006-11-09 A | PK000MBP1R | 100% |  | 2006-10-30 | 2006-12-22 |  |  |  |  |  | 2006-07-29 | 0 | 0 | 00 | PK | MB2 | 000 | PK | MB221 | CE | MB |  | H | P |  | Shipped 11Nov | 130 | 101B | 04 |  |  |  |  |  |
| PK000MBP2C | MB221 - Marshaling 101-B Crossover |  | 40d | 2006-10-30 A | 2006-11-09 A | PK000MBP1T | 100% |  | 2006-10-30 | 2006-12-22 |  |  |  |  |  | 2006-07-29 | 0 | 0 | 00 | PK | MB2 | 000 | PK | MB221 | CE | MB |  | H | P |  | Shipped 11Nov | 140 | 101B | 04 |  |  |  |  |  |
| PK000MBP4C | MB221 - Marshaling 101-B Radiant Coil/Harps |  | 40d | 2006-10-30 A | 2006-11-09 A | PK000MBP1Q | 100% |  | 2006-10-30 | 2006-12-22 |  |  |  |  |  | 2006-07-29 | 0 | 0 | 00 | PK | MB2 | 000 | PK | MB221 | CE | MB |  | H | P |  | Shipped 11Nov | 130 | 101B | 04 |  |  |  |  |  |
| PK000MC23R | MC230 - Marshaling 111/114-C |  | 40d | 2006-10-30 A | 2006-11-09 A | PK000MC23N | 100% |  | 2006-10-30 | 2006-12-22 |  |  | start on or after 2006-10-30 |  |  | 2006-07-29 | 0 | 0 | 00 | PK | MC2 | 000 | PK | MC230 | PE | MC |  | H | P |  | Shipped 11Nov (w/o 111) | 175 |  | 13 |  |  |  |  |  |
| PK000I1271 | Transport & Deliver Magnetic Flow Meters |  | 50d | 2006-10-31 A | 2006-12-29 A | PK000I1270 | 100% |  | 2006-10-31 | 2007-01-08 |  |  | start on or after 2006-10-30 |  |  | 2006-07-29 | 0 | 0 | 00 | PK | I21 | 000 | PK | I2127 | IR | I | N | N | P | Copy |  |  |  |  |  |  |  |  |  |
| PK000IC352 | DCS - FAT Test |  | 15d | 2006-10-31 A | 2006-12-01 A | EK000IC353 FS+1d, PK000IC35H | 100% |  | 2006-10-31 | 2006-11-20 |  |  |  |  |  | 2006-07-29 | 0 | 0 | 00 | PK | I35 | 000 | IC | I3510 |  | I |  |  | E |  |  | 10 |  | 02 |  |  |  |  |  |

Notes:
- PK000MB21O: P3 Activity Log Info: Includes Ship to Dock; Load; Sea Freight; / Unload Customs; Ship to Site
- PK000MB61O: P3 Activity Log Info: Includes Ship to Dock; Load; Sea Freight; / Unload Customs; Ship to Site
- PK000MB63O: P3 Activity Log Info: Includes Ship to Dock; Load; Sea Freight; / Unload Customs; Ship to Site
- PK000MB64O: P3 Activity Log Info: Includes Ship to Dock; Load; Sea Freight; / Unload Customs; Ship to Site
- PK000MB65O: P3 Activity Log Info: Includes Ship to Dock; Load; Sea Freight; / Unload Customs; Ship to Site
- PK000MB68O: P3 Activity Log Info: Includes Ship to Dock; Load; Sea Freight; / Unload Customs; Ship to Site
- PK000MB81O: P3 Activity Log Info: Includes Ship to Dock; Load; Sea Freight; / Unload Customs; Ship to Site
- PK000MC21T: P3 Activity Log Info: Includes Ship to Dock; Load; Marshalling Sea / Freight; UnloadCustoms; Ship to Site
- PK000MC23C: P3 Activity Log Info: Includes Ship to Dock; Load; Sea Freight; / Unload Customs; Ship to Site
- PK000MC61O: P3 Activity Log Info: Includes Ship to Dock; Load; Sea Freight; / Unload Customs; Ship to Site
- PK000MC61Q: P3 Activity Log Info: Includes Ship to Dock; Load; Sea Freight; / Unload Customs; Ship to Site
- PK000MD22O: P3 Activity Log Info: Includes Ship to Dock; Load; Sea Freight; / Unload Customs; Ship to Site
- PK000MD42B: P3 Activity Log Info: Includes Ship to Dock; Load; Sea Freight; / Unload Customs; Ship to Site
- PK000MD42R: P3 Activity Log Info: Includes Ship to Dock; Load; Sea Freight; / Unload Customs; Ship to Site
- PK000MD44N: P3 Activity Log Info: Includes Ship to Dock; Load; Sea Freight; / Unload Customs; Ship to Site
- PK000MD44O: P3 Activity Log Info: Includes Ship to Dock; Load; Sea Freight; / Unload Customs; Ship to Site
- PK000MD45C: P3 Activity Log Info: Includes Ship to Dock; Load; Sea Freight; / Unload Customs; Ship to Site
- PK000MD45O: P3 Activity Log Info: Includes Ship to Dock; Load; Sea Freight; / Unload Customs; Ship to Site
- PK000MD45T: P3 Activity Log Info: Includes Ship to Dock; Load; Sea Freight; / Unload Customs; Ship to Site
- PK000MD46O: P3 Activity Log Info: Includes Ship to Dock; Load; Sea Freight; / Unload Customs; Ship to Site
- PK000MD47O: P3 Activity Log Info: Includes Ship to Dock; Load; Sea Freight; / Unload Customs; Ship to Site
- PK000MJ75O: P3 Activity Log Info: Includes Ship to Dock; Load; Sea Freight; / Unload Customs; Ship to Site
- PK000ML42O: P3 Activity Log Info: Includes Ship to Dock; Load; Sea Freight; / Unload Customs; Ship to Site
- PK000ML43O: P3 Activity Log Info: Includes Ship to Dock; Load; Sea Freight; / Unload Customs; Ship to Site
- PK000MU35O: P3 Activity Log Info: Includes Ship to Dock; Load; Sea Freight; / Unload Customs; Ship to Site
- PK000MU41O: P3 Activity Log Info: Includes Ship to Dock; Load; Sea Freight; / Unload Customs; Ship to Site
- PK000MB69O: P3 Activity Log Info: Includes Ship to Dock; Load; Sea Freight; / Unload Customs; Ship to Site
- PK000MJ37O: P3 Activity Log Info: Includes Ship to Dock; Load; Sea Freight; / Unload Customs; Ship to Site
- PK000ML51O: P3 Activity Log Info: Includes Ship to Dock; Load; Sea Freight; / Unload Customs; Ship to Site
- PK000MB66O: P3 Activity Log Info: Includes Ship to Dock; Load; Sea Freight; / Unload Customs; Ship to Site
- PK000MC21S: P3 Activity Log Info: Includes Ship to Dock; Load; Marshalling Sea / Freight; UnloadCustoms; Ship to Site

| ID | Activity | Type | Duration | Start | Finish | Predecessors | Complete | Remaining | Planned start | Planned finish | Total float | Free float | Constraint | Expected finish | Calendar | zData Date | PCA Criticality Index | PCA Duration Sensitivity | zComments | user_integer2 | EB02 - UNIT | EB01 - RESP | EB06 - WORK OP | EB03 - AREA | EB05 - DISCIPLINE | EB07 - REQN | EB10 - KEY | EB04 - CLASS | EB11 - FLAG | EB09 - IPMS | EB00 - EPC | EB14 - RISK | Optimistic Duration | Most Likely Duration | Pessimistic Duration | EB21 - Rev 2 Risk Associations | EB08 - TAG | EB18 - Grouping | user_text1 |
| --- | --- | --- | --- | --- | --- | --- | --- | --- | --- | --- | --- | --- | --- | --- | --- | --- | --- | --- | --- | --- | --- | --- | --- | --- | --- | --- | --- | --- | --- | --- | --- | --- | --- | --- | --- | --- | --- | --- | --- |
| PK000ML90S | 01A ML900 - Marshaling Evap. Pond Spray Nzl. |  | 40d | 2006-11-01 A | 2007-02-09 | PK000ML90K | 75% | 10d | 2006-11-01 | 2006-12-26 | 103d | 0d |  |  |  | 2006-07-29 | 0 | 0 | Container Mat'l | 140 | 00 | PK | ML9 | 000 | PK | ML900 | FE | ML | Y | H | P | 13 |  |  |  |  |  |  |  |
| PK000I444H | Fabricate - Shelters/ Analyzers |  | 120d | 2006-11-02 A | 2006-12-29 A | EK000I444C, PK000I444K, EK000I444G, EK000I444E | 100% |  | 2006-11-02 | 2007-04-18 |  |  |  |  |  | 2006-07-29 | 0 | 1.9 |  |  | 00 | PK | I44 | 000 | PK | I4440 |  | I |  | H | P |  | 105 | 120 | 130 | 03 |  |  |  |
| PK030I1100 | Orific Plates - Fabricate/Exworks |  | 65d | 2006-11-02 A | 2007-01-09 A | EK030I1105 FS+40d, PK000I110K, EK000YA000 FS+5d | 100% |  | 2006-11-02 | 2007-01-31 |  |  |  |  |  | 2006-07-29 | 0 | 0 |  |  | 00 | PK | I21 | 000 | PK | I2110 | IR | I | N | H | P |  |  |  |  |  |  |  |  |
| PK000ML31S | ML313 - Marshaling 160-L |  | 40d | 2006-11-08 A | 2007-01-29 | PK000ML31K | 98% | 1d | 2006-11-08 | 2007-01-02 | 261d | 0d |  |  |  | 2006-07-29 | 0 | 0 | Foreign Ship | 320 | 00 | PK | ML3 | 000 | PK | ML313 | FE | ML | X | H | P | 13 |  |  |  |  | 160L |  |  |
| PK000MD44U | MD404 - Marshaling 132-F |  | 40d | 2006-11-10 A | 2007-03-09 | PK000MD44T | 25% | 30d | 2006-07-06 | 2006-08-30 | 65d | 0d |  | 2007-03-09 |  | 2006-07-29 | 0 | 0 | Plan to ship Mar (tenitive) | 140 | 00 | PK | MD4 | 000 | PK | MD404 | NE | MD |  | H | P | 13 |  |  |  |  |  |  |  |
| PK000MB33O | MB333 - Transport/Customes Equip. 101-B |  | 30d | 2006-11-13 A | 2006-12-09 A | PK000MB33K, PK000MB33S | 100% |  | 2006-11-13 | 2006-12-22 |  |  |  |  |  | 2006-07-29 | 0 | 0 |  | 50 | 00 | PK | MB3 | 000 | PK | MB333 | CE | MB |  | N | P | 04 |  |  |  |  | 101B |  |  |
| PK000MBP1U | MB221 - Transport/Customes 101-B Radiant Harps |  | 30d | 2006-11-13 A | 2006-12-09 A | PK000MBP4C | 100% |  | 2006-11-13 | 2006-12-22 |  |  |  |  |  | 2006-07-29 | 0 | 0 |  | 50 | 00 | PK | MB2 | 000 | PK | MB221 | CE | MB |  | N | P | 04 |  |  |  |  | 101B |  |  |
| PK000MBP1V | MB221 - Transport/Customes 101-B Convection Modules |  | 30d | 2006-11-13 A | 2006-12-09 A | PK000MBP1C | 100% |  | 2006-11-13 | 2006-12-22 |  |  |  |  |  | 2006-07-29 | 0 | 0 |  | 50 | 00 | PK | MB2 | 000 | PK | MB221 | CE | MB |  | N | P | 04 |  |  |  |  | 101B |  |  |
| PK000MBP1X | MB221 - Transport/Customes 101-B Radiant Ducting |  | 30d | 2006-11-13 A | 2006-12-09 A | PK000MBP3C | 100% |  | 2006-11-13 | 2006-12-22 |  |  |  |  |  | 2006-07-29 | 0 | 0 |  | 50 | 00 | PK | MB2 | 000 | PK | MB221 | CE | MB |  | N | P | 04 |  |  |  |  | 101B |  |  |
| PK000MBP1Y | MB221 - Transport/Customes 101-B Crossover |  | 30d | 2006-11-13 A | 2006-12-09 A | PK000MBP2C | 100% |  | 2006-11-13 | 2006-12-22 |  |  |  |  |  | 2006-07-29 | 0 | 0 |  | 50 | 00 | PK | MB2 | 000 | PK | MB221 | CE | MB |  | N | P | 04 |  |  |  |  | 101B |  |  |
| PK000MC21O | MC210 - Transport/Customes 110/115/124/128/130/133/134/160/167/173/174-C |  | 30d | 2006-11-13 A | 2006-12-08 A | PK000MC21S | 100% |  | 2006-11-13 | 2006-12-22 |  |  | start on or after 2006-11-10 |  |  | 2006-07-29 | 0 | 0 |  | 50 | 00 | PK | MC2 | 000 | PK | MC210 | PE | MC |  | N | P | 11 |  |  |  |  |  |  |  |
| PK000MC23O | MC230 - Transport/Customes 105/172/183-C |  | 30d | 2006-11-13 A | 2006-12-08 A | PK000MC23S | 100% |  | 2006-11-13 | 2006-12-22 |  |  |  |  |  | 2006-07-29 | 0 | 0 |  | 50 | 00 | PK | MC2 | 000 | PK | MC230 | PE | MC |  | N | P | 11 |  |  |  |  |  |  |  |
| PK000MC23T | MC230 - Transport/Customes 114-C |  | 30d | 2006-11-13 A | 2006-12-08 A | PK000MC23R | 100% |  | 2006-11-13 | 2006-12-22 |  |  |  |  |  | 2006-07-29 | 0 | 0 |  | 50 | 00 | PK | MC2 | 000 | PK | MC230 | PE | MC |  | N | P | 11 |  |  |  |  |  |  |  |
| PK000MD22C | MD202 - Transport/Customes TOWERS 104-E |  | 30d | 2006-11-13 A | 2006-12-08 A | PK000MD22B | 100% |  | 2006-11-13 | 2006-12-22 |  |  |  |  |  | 2006-07-29 | 0 | 0 |  | 50 | 00 | PK | MD2 | 000 | PK | MD202 | FE | MD |  | N | P | 11 |  |  |  |  | 104E |  |  |
| PK000MD46V | MD411 - Transport/Customes OSBL DRUMS - 2006-F |  | 30d | 2006-11-13 A | 2006-12-08 A | PK000MD46U | 100% |  | 2006-11-13 | 2006-12-22 |  |  |  |  |  | 2006-07-29 | 0 | 0 |  | 50 | 00 | PK | MD4 | 000 | PK | MD411 | PE | MD |  | N | P | 11 |  |  |  |  | 2006F |  |  |
| PK000MD51O | MD501 - Transport/Customes 107-D |  | 30d | 2006-11-13 A | 2006-12-09 A | PK000MD51S | 100% |  | 2006-11-13 | 2006-12-22 |  |  |  |  |  | 2006-07-29 | 0 | 0 |  | 50 | 00 | PK | MD5 | 000 | PK | MD501 | CE | MD |  | N | P | 11 |  |  |  |  | 107D |  |  |
| PK000ML33O | ML330 - Transport/Customes 2101-L |  | 30d | 2006-11-13 A | 2006-12-09 A | PK000ML33S | 100% |  | 2006-11-13 | 2006-12-22 |  |  |  |  |  | 2006-07-29 | 0 | 0 |  | 50 | 00 | PK | ML3 | 000 | PK | ML330 | NE | ML |  | N | P | 11 |  |  |  |  | 2101L |  |  |
| PK000MU21O | MU221 - Transport/Customs LIFT STATION |  | 30d | 2006-11-13 A | 2006-12-12 A | PK000MU21S | 100% |  | 2006-11-13 | 2006-12-22 |  |  |  |  |  | 2006-07-29 | 0 | 0 |  | 50 | 00 | PK | MU2 | 01E | PK | MU221 | NE | MU |  | N | P | 11 |  |  |  |  | 2402L |  |  |
| PK000MU22O | MU222 - Transport/Customes .2401-U |  | 30d | 2006-11-13 A | 2006-12-08 A | PK000MU22S | 100% |  | 2006-11-13 | 2006-12-22 |  |  |  |  |  | 2006-07-29 | 0 | 0 |  | 50 | 00 | PK | MU2 | 000 | PK | MU222 | NE | MU |  | N | P | 11 |  |  |  |  | 2401U |  |  |
| PK000MB42O | MB420 - Transport to Vendor 101-B Cast Peep Sites |  | 30d | 2006-11-15 A | 2006-11-30 A | PK000MB42S | 100% |  | 2006-11-15 | 2006-12-26 |  |  |  |  |  | 2006-07-29 | 0 | 0 |  | 50 | 00 | PK | MB4 | 000 | PK | MB420 | CE | MB |  | N | P |  |  |  |  |  | 101B |  |  |
| PK000MJ35S | MJ305 - Marshaling ISBL ANSI/API PUMPS |  | 40d | 2006-11-16 A | 2007-03-13 | PK000MJ35K | 20% | 32d | 2006-11-16 | 2007-01-10 | 153d | 0d |  |  |  | 2006-07-29 | 0 | 0 | Container Mat'l | 200 | 00 | PK | MJ3 | 000 | PK | MJ305 | CE | MJ |  | H | P | 13 |  |  |  |  |  |  |  |
| PK000MU32S | MU322 - Marshaling COOLING WTR FILTER & CLARIFIER |  | 40d | 2006-11-17 A | 2007-03-09 | PK000MU32K | 25% | 30d | 2006-11-17 | 2007-01-11 | 71d | 0d |  | 2007-03-09 | EBWK - Global | 2006-07-29 | 0 | 4.4 | Plan to ship Mar (tenitive) |  | 00 | PK | MU3 | 000 | PK | MU322 | NE | MU |  | H | P |  | 30 | 40 | 45 | 03 |  |  |  |
| PK020IC214 | 020 Control Valves - Transport & Deliver |  | 50d | 2006-11-20 A | 2006-12-29 A | PK020IC210 FS+9d | 100% |  | 2007-06-29 | 2007-09-06 |  |  |  |  |  | 2006-07-29 | 0 | 0 |  |  | 00 | PK | I22 | 000 | PK | I2210 | IR | I | N | N | P |  |  |  |  |  |  | Copy |  |
| PK000I3523 | SIS - Cleanup / Changes |  | 10d | 2006-11-20 A | 2006-11-22 A | PK000I3522 | 100% |  | 2006-11-20 | 2006-12-01 |  |  |  |  |  | 2006-07-29 | 0 | 0 |  | 10 | 00 | PK | I35 | 000 | IC | I3520 |  | I |  |  | E | 02 |  |  |  |  |  |  |  |
| PK0003525 | SIS - Ship to DCS Shop/ Setup |  | 10d | 2006-11-23 A | 2006-11-23 A | PK000I3523 | 100% |  | 2006-11-23 | 2006-12-06 |  |  |  |  |  | 2006-07-29 | 0 | 0 |  | 10 | 00 | PK | I35 | 000 | IC | I3520 |  | I |  |  | E | 02 |  |  |  |  |  |  |  |
| PK000I3544 | ITCC - Cleanup / Changes |  | 10d | 2006-11-23 A | 2006-11-27 A | PK000I3543 | 100% |  | 2006-11-23 | 2006-12-06 |  |  |  |  |  | 2006-07-29 | 0 | 0 |  | 10 | 00 | PK | I35 | 000 | IC | I3542 |  | I |  |  | E | 02 |  |  |  |  |  |  |  |
| PK000I354P | ITCC - Ship to DCS Shop/ Setup |  | 10d | 2006-11-27 A | 2006-11-27 A | PK000I3544 | 100% |  | 2006-11-27 | 2006-12-08 |  |  |  |  |  | 2006-07-29 | 0 | 0 |  | 10 | 00 | PK | I35 | 000 | IC | I3542 |  | I |  |  | E | 02 |  |  |  |  |  |  |  |
| PK030I611H | Fabricate / Exworks - Pressure Gauges - OSBL |  | 50d | 2006-11-27 A | 2007-03-06 | EK030I611A FS+40d, PK000I611K | 46% | 27d | 2006-11-27 | 2007-02-02 | 58d | 0d |  | 2007-03-06 |  | 2006-07-29 | 0 | 0 |  |  | 00 | PK | I16 | 000 | PK | I1611 |  | I |  | H | P |  |  |  |  |  |  |  |  |
| PK000MB71S | MB710 - Marshaling 2202-B/BL Storage Flare & Flame FRT Gen. |  | 40d | 2006-11-27 A | 2007-03-09 | PK000MB71K | 25% | 30d | 2006-11-27 | 2007-01-22 | 240d | 0d |  | 2007-03-09 |  | 2006-07-29 | 0 | 0 | Plan to ship Mar (tenitive) | 130 | 00 | PK | MB7 | 000 | PK | MB710 | CE | MB |  | H | P |  |  |  |  |  | 2202B |  |  |
| PK000MD41S | MD401 - Marshaling 101-F |  | 60d | 2006-11-30 A | 2007-03-09 | PK000MD41K | 50% | 30d | 2006-11-15 | 2007-02-06 | 175d | 0d |  | 2007-03-09 |  | 2006-07-29 | 0 | 0 | Foreign Ship (ready in Dec) Ship in Mar | 200 | 00 | PK | MD4 | 000 | PK | MD401 | CE | MD |  | H | P | 13 |  |  |  |  | 101F |  | L&T order, delays due to flooding. |
| PK000IC353 | DCS - Cleanup / Changes |  | 10d | 2006-12-01 A | 2006-12-01 A | PK000IC352 | 100% |  | 2006-12-01 | 2006-12-14 |  |  | start on or after 2006-11-30 |  |  | 2006-07-29 | 0 | 0 |  | 10 | 00 | PK | I35 | 000 | IC | I3510 |  | I |  |  | E | 02 |  |  |  |  |  |  |  |
| PK000MJ21O | MJ202 - Transport/Customes 102/3/5-J |  | 30d | 2006-12-01 A | 2006-12-15 A | PK000MJ21N, PK000MJ21S | 100% |  | 2006-12-01 | 2007-01-11 |  |  |  |  |  | 2006-07-29 | 0 | 0 |  | 50 | 00 | PK | MJ2 | 000 | PK | MJ202 | CE | MJ |  | N | P | 06 |  |  |  |  |  |  |  |
| PK000MU25S | 02G MU225 - Marshaling LIFT STATION |  | 40d | 2006-12-01 A | 2007-03-09 | PK000MU25K | 25% | 30d | 2006-12-01 | 2007-01-25 | 215d | 0d |  | 2007-03-09 | EBWK - Global | 2006-07-29 | 0 | 0.5 | Plan to ship Mar (tenitive) |  | 00 | PK | MU2 | 000 | PK | MU225 | NE | MU |  | H | P |  | 30 | 40 | 50 | 03 |  |  |  |
| PK0003526 | SIS - Integrated FAT |  | 10d | 2006-12-04 A | 2006-12-08 A | PK000IC355 SS, PK000I3522 SS, PK0003525 FS+1d | 100% |  | 2006-12-04 | 2006-12-15 |  |  | start on or after 2006-12-04 |  |  | 2006-07-29 | 0 | 0 |  | 10 | 00 | PK | I35 | 000 | IC | I3520 |  | I |  |  | E | 02 |  |  |  |  |  |  |  |
| PK000I354Q | ITCC - Integrated FAT |  | 10d | 2006-12-04 A | 2006-12-08 A | PK000IC355 SS, PK000I354P FS+1d | 100% |  | 2006-12-04 | 2006-12-15 |  |  | start on or after 2006-12-04 |  |  | 2006-07-29 | 0 | 0 |  | 10 | 00 | PK | I35 | 000 | IC | I3542 |  | I |  |  | E | 02 |  |  |  |  |  |  |  |
| PK000IC355 | DCS - ITCC / SIS / DCS - Integrated FAT |  | 10d | 2006-12-04 A | 2006-12-08 A | PK000IC352 FS+2d | 100% |  | 2006-12-04 | 2006-12-15 |  |  |  |  |  | 2006-07-29 | 0 | 0 |  | 10 | 00 | PK | I35 | 000 | IC | I3510 |  | I |  |  | E | 02 |  |  |  |  |  |  |  |
| PK030IC214 | 030 Control Valves - Transport & Delivery |  | 50d | 2006-12-04 A | 2006-12-29 A | PK030IC210 FS+4d | 100% |  | 2006-12-04 | 2007-02-09 |  |  |  |  |  | 2006-07-29 | 0 | 0 |  |  | 00 | PK | I22 | 000 | PK | I2210 | IR | I | N | N | P |  |  |  |  |  |  |  |  |
| PK000MD34T | MD304 - Marshaling 108-DA/B |  | 42d | 2006-12-06 A | 2007-03-09 | PK000MD34Z | 29% | 30d | 2006-12-06 | 2007-02-01 | 162d | 0d |  | 2007-03-09 |  | 2006-07-29 | 0 | 0 | Plan to ship Mar (tenitive) | 260 | 00 | PK | MD3 | 000 | PK | MD304 | CE | MD |  | H | P | 13 |  |  |  |  | 108DA |  |  |
| PK000I3524 | SIS - Packing / Exworks |  | 5d | 2006-12-11 A | 2007-02-09 | PK000I3523, PK000IC355, PK0003526 |  | 10d | 2006-12-11 | 2006-12-15 | 55d | 0d | start on or after 2006-12-04 |  |  | 2006-07-29 | 0 | 0 |  | 5 | 00 | PK | I35 | 000 | IC | I3520 |  | I |  |  | P | 02 | 4 | 5 | 10 | 03 |  |  |  |
| PK000I3545 | ITCC - Packing / Exworks |  | 5d | 2006-12-11 A | 2007-02-09 | PK000I3544, PK000IC355, PK000I354Q |  | 10d | 2006-12-11 | 2006-12-15 | 55d | 0d |  |  |  | 2006-07-29 | 0 | 1.3 |  | 5 | 00 | PK | I35 | 000 | IC | I3542 |  | I |  |  | P | 02 | 4 | 5 | 10 | 03 |  |  |  |
| PK000IC354 | DCS - Packing / Exworks |  | 5d | 2006-12-11 A | 2007-01-29 | PK000IC353, PK000IC355 | 100% | 0d | 2006-12-11 | 2006-12-15 | 85d | 0d |  | 2007-01-26 |  | 2006-07-29 | 0 | 0.7 |  | 5 | 00 | PK | I35 | 000 | IC | I3510 |  | I |  |  | E | 02 | 4 | 5 | 10 | 03 |  |  |  |
| PK000MU30S | MU300 - Marshaling 2102-U |  | 40d | 2006-12-11 A | 2007-03-09 | PK000MU30K | 25% | 30d | 2006-12-11 | 2007-02-02 | 76d | 0d |  | 2007-03-09 |  | 2006-07-29 | 0 | 0 | Plan to ship Mar (tenitive) | 140 | 00 | PK | MU3 | 000 | PK | MU300 | FE | MU | X | H | P | 09 |  |  |  |  | 2102U |  |  |
| PK000MU33S | MU330 - Marshaling 2001-U |  | 40d | 2006-12-12 A | 2007-03-09 | PK000MU33K | 25% | 30d | 2006-12-12 | 2007-02-05 | 111d | 0d |  | 2007-03-09 |  | 2006-07-29 | 0 | 0 | Plan to ship Mar (tenitive) | 260 | 00 | PK | MU3 | 000 | PK | MU330 | FE | MU |  | H | P | 13 |  |  |  |  | 2001U |  |  |
| ZZ2090 | MJ305 - Marshaling OSBL ANSI/API PUMPS |  | 40d | 2006-12-13 A | 2007-01-29 | ZZ2070 | 100% | 0d | 2006-12-13 | 2007-02-06 | 190d | 0d |  | 2007-01-12 |  | 2006-07-29 | 0 | 0 | Container Mat'l | 200 | 01 | PK | MJ3 | 01B | PK | MJ305 | CE | MJ |  | H | P | 13 |  |  |  |  |  |  |  |
| PK000I617N | Transport & Deliver - Magnetic Lvl Gauges |  | 50d | 2006-12-18 A | 2007-02-12 | PK000I617H | 78% | 11d | 2006-12-18 | 2007-02-23 | 104d | 0d |  |  |  | 2006-07-29 | 0 | 0 |  |  | 00 | PK | I16 | 000 | PK | I1617 |  | I |  | N | P |  |  |  |  |  |  |  |  |
| PK000MB62S | MB621 - Marshaling 101-B ID & FD Fans |  | 40d | 2006-12-18 A | 2007-03-16 | PK000MB62K | 12% | 35d | 2006-12-18 | 2007-02-09 | 215d | 0d |  |  |  | 2006-07-29 | 0 | 0 | Plan to ship Mar (tenitive) | 200 | 00 | PK | MB6 | 000 | PK | MB621 | CE | MB |  | H | P |  |  |  |  |  | 101BJ1 |  |  |
| PK000I611N | Transport & Deliver - Pressure Gauges - ISBL |  | 50d | 2006-12-20 A | 2007-02-02 | PK000I611H | 90% | 5d | 2006-12-20 | 2007-02-27 | 110d | 0d |  |  |  | 2006-07-29 | 0 | 0 |  |  | 00 | PK | I16 | 000 | PK | I1611 |  | I |  | N | P |  |  |  |  |  |  |  |  |
| PK020I131N | Transport & Deliver - Transmitters -Press. |  | 50d | 2006-12-28 A | 2007-03-22 | PK020I131H | 22% | 39d | 2006-12-28 | 2007-03-07 | 76d | 0d |  | 2007-03-22 |  | 2006-07-29 | 0 | 0 |  |  | 00 | PK | I13 | 000 | PK | I1310 |  | I |  | N | P |  |  |  |  |  |  |  |  |
| PK000PIA1M | Bulk Piping A/G - Receive at Site (CHROME) | milestone | 0d | 2006-12-29 A | 2006-12-29 A | PK000PIA1L, CK000YA306 | 100% |  | 2007-01-22 | 2007-01-22 |  |  |  |  | EBWK 6 Day Egypt Holidays | 2006-07-29 | 0 | 0 |  | 0 | 00 | PK | P00 | 000 | PK | PIA11 |  | P |  | L | P |  |  |  |  |  |  |  |  |
| PK000PTA0J | Engineered Pipe Supports - Transport |  | 50d | 2007-01-01 A | 2007-03-12 | PK000PTA0G | 38% | 31d |  |  | 58d | 0d |  | 2007-03-12 |  | 2006-07-29 | 0 | 0 |  |  | 00 | PK | P60 | 000 | PK | PTA02 |  | P |  | N | P |  |  |  |  |  |  |  |  |
| PK010IC262 | MOV Valves - Transport & Deliver |  | 50d | 2007-01-02 A | 2007-04-20 | PK010IC252 FS+4d | 30% | 35d | 2007-01-02 | 2007-03-12 | 475d | 0d |  |  |  | 2006-07-29 | 0 | 0 |  |  | 00 | PK | I22 | 000 | PK | I2220 | IR | I | N | N | P |  |  |  |  |  |  |  |  |
| PK000I2330 | On/Off Valves - Transport & Deliver |  | 50d | 2007-01-03 A | 2007-05-11 | PK000I2300 | 10% | 45d | 2007-01-03 | 2007-03-13 | 460d | 0d |  |  |  | 2006-07-29 | 0 | 0 |  |  | 00 | PK | I22 | 000 | PK | I2230 | IR | I | N | N | P |  |  |  |  |  |  | Copy |  |
| PK010I1211 | Vortex Meters - Transport & Deliver |  | 50d | 2007-01-15 A | 2007-01-30 | PK010I1210 | 96% | 2d | 2007-01-15 | 2007-03-23 | 533d | 0d |  | 2007-01-30 |  | 2006-07-29 | 0 | 0 |  |  | 00 | PK | I21 | 000 | PK | I2121 | IR | I | N | N | P |  |  |  |  |  |  |  |  |
| PK000I4440 | FAT Test - Shelters/ Analyzers |  | 10d | 2007-01-29 | 2007-02-09 | PK000I444H |  |  |  |  | 161d | 0d |  |  |  | 2006-07-29 | 0 | 0 |  |  | 00 | PK | I44 | 000 | IC | I4440 |  | I |  |  | P |  |  |  |  |  |  |  |  |
| PK000I612H | Fabricate / Exworks - Differential Pressure Gauges |  | 51d | 2007-01-29 | 2007-03-20 | EK000I612A FS+40d, PK000I612K |  |  | 2007-01-29 | 2007-04-09 | 28d | 0d |  |  |  | 2006-07-29 | 0 | 0 |  |  | 00 | PK | I16 | 000 | PK | I1612 |  | I |  | H | P |  |  |  |  |  |  |  |  |
| PK000IC35N | DCS - Transport (Hold for Field Request) |  | 50d | 2007-01-29 | 2007-03-09 | PK000IC35H, PK000IC35M, PK000IC354 |  |  | 2007-01-29 | 2007-04-06 | 85d | 0d |  |  |  | 2006-07-29 | 0 | 1.9 |  | 50 | 00 | PK | I35 | 000 | PK | I3510 |  | I |  | N | P | 02 | 40 | 50 | 55 | 03 |  |  |  |
| PK000MU31S | MU310 - Marshaling Injection System & Chlorination Unit |  | 40d | 2007-01-29 A | 2007-03-09 | PK000MU31K | 25% | 30d | 2007-01-29 | 2007-03-23 | 59d | 0d |  | 2007-03-09 |  | 2006-07-29 | 0 | 0 | Plan to ship Mar (tenitive) |  | 00 | PK | MU3 | 000 | PK | MU310 | NE | MU |  | H | P |  | 30 | 40 | 50 | 03 |  |  |  |
| PK000PIA1N | Bulk Piping A/G - Fab/Exworks (FINAL) |  | 50d | 2007-01-29 | 2007-04-06 | EK000PI200 FF |  |  |  |  | 45d | 0d |  |  |  | 2006-07-29 | 0 | 4 |  | 30 | 00 | PK | P00 | 000 | PK | PIA11 |  | P |  | H | P | 01 | 40 | 50 | 55 | 02 |  |  |  |
| PK000PSA8H | 000 Relief Valves - Transport & Deliver |  | 50d | 2007-01-29 | 2007-03-26 | PK000PSA8G |  |  | 2007-01-29 | 2007-04-06 | 257d | 0d |  |  |  | 2006-07-29 | 0 | 0 |  |  | 00 | PK | I22 | 000 | PK | PSA08 | IR | P | N | N | P |  |  |  |  |  |  |  |  |
| PK030I1103 | Orific Plates -Transport & Deliver |  | 50d | 2007-01-29 | 2007-02-26 | PK030I1100 |  |  | 2007-01-29 | 2007-04-06 | 514d | 0d |  |  |  | 2006-07-29 | 0 | 0 |  |  | 00 | PK | I21 | 000 | PK | I2110 | IR | I | N | N | P |  |  |  |  |  |  |  |  |
| ZZ2080 | MJ305 - Transport/Customes OSBL ANSI/API PUMPS |  | 30d | 2007-01-29 | 2007-03-09 | ZZ2090 |  |  |  |  | 190d | 0d |  |  |  | 2006-07-29 | 0 | 0 |  | 50 | 01 | PK | MJ3 | 01B | PK | MJ305 | CE | MJ |  | N | P | 11 |  |  |  |  |  |  |  |
| PK000I1131 | Venturis - Transport & Deliver |  | 50d | 2007-01-30 | 2007-03-05 | PK000I1121 |  |  | 2007-01-30 | 2007-04-09 | 509d | 0d |  |  |  | 2006-07-29 | 0 | 0 |  |  | 00 | PK | I21 | 000 | PK | I2112 | IR | I | N | N | P |  |  |  |  |  |  | Copy |  |
| PK000I221N | 000 Everest Control Valves - Transport & Deliver |  | 50d | 2007-01-30 | 2007-03-12 | PK000I221H |  |  | 2007-01-30 | 2007-04-09 | 504d | 0d |  |  |  | 2006-07-29 | 0 | 0 |  |  | 00 | PK | I22 | 000 | PK | I2211 | IR | I | N | N | P |  |  |  |  |  |  |  |  |
| PK000MB51S | MB511 - Marshaling 101-B Insulation |  | 40d | 2007-01-30 | 2007-02-19 | PK000MB51K |  |  | 2007-01-30 | 2007-03-26 | 204d | 0d |  |  |  | 2006-07-29 | 0 | 0 | Container Mat'l | 120 | 00 | PK | MB5 | 000 | PK | MB511 | CE | MB | X | H | P |  |  |  |  |  | 101B |  |  |
| PK000ML31O | ML313 - Transport/Customs 160-L |  | 25d | 2007-01-30 | 2007-02-23 | PK000ML31S |  |  |  |  | 365d | 0d |  |  | EBC4 - 3 - Seven-Day | 2006-07-29 | 0 | 0 |  |  | 00 | PK | ML3 | 000 | PK | ML313 | FE | ML |  | N | P |  |  |  |  |  | 160L |  |  |
| PK000PS00H | 000 SP Items - Transport & Deliver |  | 50d | 2007-01-30 | 2007-04-09 | PK000PS00G |  |  |  |  | 247d | 0d |  |  |  | 2006-07-29 | 0 | 0 |  |  | 00 | PK | P90 | 000 | PK | PS000 | IR | P | N | N | P |  |  |  |  |  |  |  |  |
| PK010I1151 | Annubars - Transport & Deliver |  | 50d | 2007-01-30 | 2007-03-05 | PK010I1150 |  |  | 2007-01-30 | 2007-04-09 | 509d | 0d |  |  |  | 2006-07-29 | 0 | 0 |  |  | 00 | PK | I21 | 000 | PK | I2115 | IR | I | N | N | P |  |  |  |  |  |  |  |  |
| PK000MD21S | MD201- Marshaling 101-E |  | 40d | 2007-02-01 | 2007-03-09 | PK000MD21K |  |  | 2007-02-01 | 2007-03-28 | 93d | 0d |  |  |  | 2006-07-29 | 0 | 0 | HL, Plan to Ship Mar (tenitive) | 280 | 00 | PK | MD2 | 000 | PK | MD201 | FE | MD | HD | H | P | 12 |  |  |  |  | 101E |  |  |
| PK000I352N | SIS - Transport & Delivery |  | 50d | 2007-02-12 | 2007-04-20 | PK000I352H, EK000I352M, PK000I3524 |  |  |  |  | 55d | 0d |  |  |  | 2006-07-29 | 0 | 0 |  | 50 | 00 | PK | I35 | 000 | IC | I3520 |  | I |  | N | P | 02 | 40 | 50 | 55 | 03 |  |  |  |
| PK000I354N | ITCC - Transport & Delivery |  | 50d | 2007-02-12 | 2007-04-20 | PK000I354H, EK000I354M, PK000I3545 |  |  |  |  | 55d | 0d |  |  |  | 2006-07-29 | 0 | 0 |  | 50 | 00 | PK | I35 | 000 | IC | I3542 |  | I |  | N | P | 02 | 40 | 50 | 55 | 03 |  |  |  |

Notes:
- PK000MB33O: P3 Activity Log Info: Includes Ship to Dock; Load; Sea Freight; / Unload Customs; Ship to Site
- PK000MBP1U: P3 Activity Log Info: Includes Ship to Dock; Load; Sea Freight; / Unload Customs; Ship to Site
- PK000MBP1X: P3 Activity Log Info: Includes Ship to Dock; Load; Sea Freight; / Unload Customs; Ship to Site
- PK000MBP1Y: P3 Activity Log Info: Includes Ship to Dock; Load; Sea Freight; / Unload Customs; Ship to Site
- PK000MC21O: P3 Activity Log Info: Includes Ship to Dock; Load; Marshalling Sea / Freight; UnloadCustoms; Ship to Site
- PK000MC23O: P3 Activity Log Info: Includes Ship to Dock; Load; Sea Freight; / Unload Customs; Ship to Site
- PK000MC23T: P3 Activity Log Info: Includes Ship to Dock; Load; Sea Freight; / Unload Customs; Ship to Site
- PK000MD22C: P3 Activity Log Info: Includes Ship to Dock; Load; Sea Freight; / Unload Customs; Ship to Site
- PK000MD46V: P3 Activity Log Info: Includes Ship to Dock; Load; Sea Freight; / Unload Customs; Ship to Site
- PK000MD51O: P3 Activity Log Info: Includes Ship to Dock; Load; Sea Freight; / Unload Customs; Ship to Site
- PK000ML33O: P3 Activity Log Info: Includes Ship to Dock; Load; Sea Freight; / Unload Customs; Ship to Site
- PK000MU21O: P3 Activity Log Info: Includes Ship to Dock; Load; Sea Freight; / Unload Customs; Ship to Site
- PK000MU22O: P3 Activity Log Info: Includes Ship to Dock; Load; Sea Freight; / Unload Customs; Ship to Site
- PK000MB42O: P3 Activity Log Info: Includes Ship to Dock; Load; Sea Freight; / Unload Customs; Ship to Site
- PK000MJ21O: P3 Activity Log Info: Includes Ship to Dock; Load; Sea Freight; / Unload Customs; Ship to Site
- ZZ2080: P3 Activity Log Info: Includes Ship to Dock; Load; Sea Freight; / Unload Customs; Ship to Site
- PK000ML31O: P3 Activity Log Info: Includes Ship to Dock; Load; Sea Freight; / Unload Customs; Ship to Site

| ID | Activity | Type | Duration | Start | Finish | Predecessors | Planned start | Planned finish | Total float | Free float | Constraint | Calendar | zData Date | PCA Criticality Index | PCA Duration Sensitivity | EB02 - UNIT | EB01 - RESP | EB06 - WORK OP | EB03 - AREA | EB05 - DISCIPLINE | EB07 - REQN | EB04 - CLASS | EB00 - EPC | zComments | user_integer2 | EB08 - TAG | EB10 - KEY | EB11 - FLAG | EB09 - IPMS | EB14 - RISK | Optimistic Duration | Most Likely Duration | Pessimistic Duration | EB21 - Rev 2 Risk Associations | user_integer1 |
| --- | --- | --- | --- | --- | --- | --- | --- | --- | --- | --- | --- | --- | --- | --- | --- | --- | --- | --- | --- | --- | --- | --- | --- | --- | --- | --- | --- | --- | --- | --- | --- | --- | --- | --- | --- |
| PK000I4441 | Cleanup / Changes - Shelters/ Analyzers |  | 10d | 2007-02-12 | 2007-02-23 | PK000I4440 |  |  | 161d | 0d |  |  | 2006-07-29 | 0 | 0 | 00 | PK | I44 | 000 | IC | I4440 | I | P |  |  |  |  |  |  |  |  |  |  |  |  |
| PK000MD32S | MD302 - Marshaling 104-D1/2 |  | 40d | 2007-02-12 | 2007-03-09 | PK000MD32K | 2007-02-12 | 2007-04-06 | 85d | 0d | start on or after 2006-12-11 |  | 2006-07-29 | 0 | 0 | 00 | PK | MD3 | 000 | PK | MD302 | MD | P | HL, Plan to Ship Mar (tenitive) | 260 | 104D1 | CE | HD | H | 13 |  |  |  |  |  |
| PK000MJ22S | MJ201 - Marshaling 101-J |  | 40d | 2007-02-12 | 2007-03-02 | PK000MJ22K | 2007-02-12 | 2007-04-06 | 86d | 0d |  |  | 2006-07-29 | 0 | 0 | 00 | PK | MJ2 | 000 | PK | MJ201 | MJ | P | Foreign Ship | 326 | 101J | CE | X | H | 06 |  |  |  |  |  |
| PK000MJ36S | MJ305 - Marshaling OSBL PUMPS |  | 40d | 2007-02-12 | 2007-03-02 | PK000MJ36K | 2007-02-12 | 2007-04-06 | 60d | 0d |  |  | 2006-07-29 | 5.7 | 0.9 | 00 | PK | MJ3 | 000 | PK | MJ305 | MJ | P | Container Mat'l | 220 |  | PE |  | H | 13 | 30 | 40 | 45 |  |  |
| PK000MJ38V | MJ308 - Marshaling ISBL ANSI/API PUMPS |  | 40d | 2007-02-12 | 2007-03-02 | PK000MJ38U | 2007-02-12 | 2007-04-06 | 198d | 0d |  |  | 2006-07-29 | 0.2 | 4.6 | 00 | PK | MJ3 | 000 | PK | MJ308 | MJ | P | Container Mat'l | 200 | 2100JA | CE |  | H | 13 | 30 | 40 | 50 | 03 |  |
| PK000MJ39S | Marshaling FIREWATER PUMPS |  | 40d | 2007-02-12 | 2007-03-02 | PK000MJ39K | 2007-02-12 | 2007-04-06 | 60d | 0d |  |  | 2006-07-29 | 0 | 3.7 | 00 | PK | MJ3 | 000 | PK | MJ391 | MJ | P |  | 200 |  | PE |  | H | 13 | 30 | 40 | 50 | 03 |  |
| PK000ML90O | 01A ML900 - Transport/Customes Evap. Pond Spray Nzl. |  | 30d | 2007-02-12 | 2007-03-23 | PK000ML90S |  |  | 103d | 0d |  |  | 2006-07-29 | 0 | 0 | 00 | PK | ML9 | 000 | PK | ML900 | ML | P |  | 50 |  | FE |  | N | 11 |  |  |  |  |  |
| PK000MC32S | MC311 - Marshaling KBR S&T EXCH |  | 40d | 2007-02-16 | 2007-04-05 | PK000MC32K | 2007-02-16 | 2007-04-12 | 76d | 0d |  |  | 2006-07-29 | 0 | 0 | 00 | PK | MC3 | 000 | PK | MC311 | MC | P | Plan to ship Mar (tenitive) | 300 |  | PE |  | H | 13 |  |  |  |  |  |
| PK000MJ34S | MJ304 - Marshaling MP BFW PUMPS |  | 40d | 2007-02-16 | 2007-03-08 | PK000MJ34K | 2007-02-16 | 2007-04-12 | 186d | 0d |  |  | 2006-07-29 | 0 | 0 | 00 | PK | MJ3 | 000 | PK | MJ304 | MJ | P |  | 250 | 2003J | FE |  | H | 13 |  |  |  |  |  |
| PK030I131N | Transport & Deliver - Transmitters - Temp. |  | 50d | 2007-02-16 | 2007-03-01 | PK030I131H | 2007-02-16 | 2007-04-26 | 91d | 21d |  |  | 2006-07-29 | 0 | 0 | 00 | PK | I13 | 000 | PK | I1310 | I | P |  |  |  |  |  | N |  |  |  |  |  |  |
| PK000MJ32S | MJ302 - Marshaling 107-JA/JB/JC |  | 40d | 2007-02-19 | 2007-03-09 | PK000MJ32K | 2007-02-19 | 2007-04-13 | 175d | 0d |  |  | 2006-07-29 | 0 | 0 | 00 | PK | MJ3 | 000 | PK | MJ302 | MJ | P | Plan to ship Mar (tenitive) | 280 | 107JA | FE | X | H | 13 |  |  |  |  |  |
| PK000MB51O | MB511 - Transport/Customes 101-B Insulation |  | 30d | 2007-02-20 | 2007-04-02 | PK000MB51S |  |  | 204d | 0d |  |  | 2006-07-29 | 0 | 0 | 00 | PK | MB5 | 000 | PK | MB511 | MB | P |  | 50 | 101B | CE |  | N |  |  |  |  |  |  |
| PK000MJ37V | MJ307 - Marshaling ISBL ANSI/API PUMPS |  | 40d | 2007-02-20 | 2007-03-12 | PK000MJ37U | 2007-02-20 | 2007-04-16 | 192d | 0d |  |  | 2006-07-29 | 0 | 0.8 | 00 | PK | MJ3 | 000 | PK | MJ307 | MJ | P | Container Mat'l | 200 | 2100JA | CE |  | H | 13 | 30 | 40 | 50 | 03 |  |
| PK000I4442 | Packing / Exworks - Shelters/ Analyzers |  | 5d | 2007-02-26 | 2007-03-02 | PK000I4441 |  |  | 161d | 0d |  |  | 2006-07-29 | 0 | 0 | 00 | PK | I44 | 000 | IC | I4440 | I | P |  |  |  |  |  |  |  |  |  |  |  |  |
| PK000MD34S | MD304 - Marshaling 106-D, 109-DA/B |  | 42d | 2007-03-01 | 2007-03-09 | PK000MD34K | 2007-03-01 | 2007-04-27 | 200d | 0d | start on or after 2006-12-29 |  | 2006-07-29 | 0 | 0 | 00 | PK | MD3 | 000 | PK | MD304 | MD | P | Plan to ship Mar | 260 |  | CE |  | H | 13 |  |  |  |  |  |
| PK000I444N | Transport & Deliver - Shelters/ Analyzers |  | 50d | 2007-03-05 | 2007-05-11 | PK000I4442 |  |  | 161d | 0d |  |  | 2006-07-29 | 0 | 0 | 00 | PK | I44 | 000 | PK | I4440 | I | P |  |  |  |  |  | N |  | 40 | 50 | 55 | 03 |  |
| PK000MJ22O | MJ201 - Transport/Customs 101-J |  | 25d | 2007-03-05 | 2007-04-06 | PK000MJ22S |  |  | 86d | 0d |  |  | 2006-07-29 | 0 | 0 | 00 | PK | MJ2 | 000 | PK | MJ201 | MJ | P |  | 45 | 101J | CE |  | N | 06 |  |  |  |  |  |
| PK000MJ31S | MJ301 - Marshaling 104-J |  | 40d | 2007-03-05 | 2007-04-03 | PK000MJ31K | 2007-03-05 | 2007-04-27 | 168d | 0d |  |  | 2006-07-29 | 0 | 0 | 00 | PK | MJ3 | 000 | PK | MJ301 | MJ | P | Plan to ship Apr (tenitive) | 280 | 104J | FE | X | H | 13 |  |  |  |  |  |
| PK000MJ36O | MJ305 - Transport/Customes OSBL PUMPS |  | 30d | 2007-03-05 | 2007-04-13 | PK000MJ36S |  |  | 60d | 0d |  |  | 2006-07-29 | 5.7 | 0 | 00 | PK | MJ3 | 000 | PK | MJ305 | MJ | P |  | 50 |  | PE |  | N | 11 | 25 | 30 | 35 |  |  |
| PK000MJ38W | MJ308 - Transport/Customes ISBL ANSI/API PUMP |  | 30d | 2007-03-05 | 2007-04-13 | PK000MJ38V |  |  | 198d | 0d |  |  | 2006-07-29 | 0.2 | 1.3 | 00 | PK | MJ3 | 000 | PK | MJ308 | MJ | P |  | 50 | 2100JA | CE |  | N | 11 | 25 | 30 | 40 | 03 |  |
| PK000MJ39O | Transport/Customes FIREWATER PUMPS |  | 30d | 2007-03-05 | 2007-04-13 | PK000MJ39S |  |  | 60d | 0d |  |  | 2006-07-29 | 0 | 0 | 00 | PK | MJ3 | 000 | PK | MJ391 | MJ | P |  | 50 |  | PE |  | N | 11 | 25 | 30 | 40 | 03 |  |
| PK000E002X | Transformer - Marshalling |  | 40d | 2007-03-07 | 2007-05-01 | PK000E002H |  |  | 28d | 0d |  |  | 2006-07-29 | 0 | 0.5 | 00 | PK | EF5 | 000 | PK | E0002 | E | P |  |  |  |  |  | H |  | 30 | 40 | 50 | 03 |  |
| PK030I611N | Transport & Deliver - Pressure Gauges - OSBL |  | 50d | 2007-03-07 | 2007-03-27 | PK030I611H | 2007-03-07 | 2007-05-15 | 73d | 15d |  |  | 2006-07-29 | 0 | 0 | 00 | PK | I16 | 000 | PK | I1611 | I | P |  |  |  |  |  | N |  |  |  |  |  |  |
| PK000E004X | UPS System - Marshalling |  | 40d | 2007-03-08 | 2007-05-02 | PK000E004H |  |  | 27d | 0d |  |  | 2006-07-29 | 7.6 | 0 | 00 | PK | EF6 | 000 | PK | E0004 | E | P |  |  |  |  |  | H |  | 30 | 40 | 45 | 03 |  |
| PK000MJ34O | MJ304 - Transport/Customes MP BFW PUMPS |  | 30d | 2007-03-09 | 2007-04-19 | PK000MJ34K, PK000MJ34S |  |  | 186d | 0d |  |  | 2006-07-29 | 0 | 0 | 00 | PK | MJ3 | 000 | PK | MJ304 | MJ | P |  |  | 2003J | FE |  | N |  |  |  |  |  |  |
| PK000MB71O | MB710 - Transport/Customes 2202-B/BL Storage Flare & Flame FRT Gen. |  | 30d | 2007-03-10 | 2007-03-30 | PK000MB71S | 2007-03-10 | 2007-04-08 | 336d | 0d |  | EBWK - 3 - 7 Day Work Week | 2006-07-29 | 0 | 0 | 00 | PK | MB7 | 000 | PK | MB710 | MB | P |  | 50 | 2202B | CE |  | N |  |  |  |  |  |  |
| PK000MD21O | MD201 - Transport/Customes 101-E |  | 30d | 2007-03-10 | 2007-03-30 | PK000MD21S | 2007-03-10 | 2007-04-08 | 131d | 0d |  | EBWK - 3 - 7 Day Work Week | 2006-07-29 | 0 | 0 | 00 | PK | MD2 | 000 | PK | MD201 | MD | P |  | 40 | 101E | FE | HD | N | 12 |  |  |  |  |  |
| PK000MD32O | MD302 - Transport/Customes 104-D1/2 |  | 30d | 2007-03-10 | 2007-03-30 | PK000MD32S | 2007-03-10 | 2007-04-08 | 120d | 0d |  | EBC4 - 3 - Seven-Day | 2006-07-29 | 0 | 0 | 00 | PK | MD3 | 000 | PK | MD302 | MD | P |  | 45 | 104D1 | CE | HD | N | 11 |  |  |  |  |  |
| PK000MD34O | MD304 - Transport/Customes 106-D, 109-DA/B |  | 30d | 2007-03-10 | 2007-03-30 | PK000MD34S | 2007-03-10 | 2007-04-08 | 280d | 0d |  | EBWK - 3 - 7 Day Work Week | 2006-07-29 | 0 | 0 | 00 | PK | MD3 | 000 | PK | MD304 | MD | P |  | 50 |  | CE |  | N | 11 |  |  |  |  |  |
| PK000MD41O | MD401 - Transport/Customes 101-F |  | 20d | 2007-03-10 | 2007-03-30 | PK000MD41S | 2007-03-10 | 2007-03-29 | 246d | 0d |  | EBWK - 3 - 7 Day Work Week | 2006-07-29 | 0 | 0 | 00 | PK | MD4 | 000 | PK | MD401 | MD | P |  |  | 101F | CE |  | N |  |  |  |  |  |  |
| PK000MD44V | MD404 - Transport/Customes 132-F |  | 30d | 2007-03-10 | 2007-03-30 | PK000MD44U | 2007-03-10 | 2007-04-08 | 93d | 0d |  | EBWK - 3 - 7 Day Work Week | 2006-07-29 | 0 | 0 | 00 | PK | MD4 | 000 | PK | MD404 | MD | P |  | 50 |  | NE |  | N | 11 |  |  |  |  |  |
| PK000MU225 | 02G MU225 Transport/Customes LIFT STATION |  | 30d | 2007-03-10 | 2007-03-30 | PK000MU25S | 2007-03-10 | 2007-04-08 | 302d | 0d |  | EBWK - 3 - 7 Day Work Week | 2006-07-29 | 0 | 2.2 | 00 | PK | MU2 | 000 | PK | MU225 | MU | P |  |  |  | NE |  | N |  | 25 | 30 | 40 | 03 |  |
| PK000MU29O | MU292 - Transport/Customes 2404-L |  | 30d | 2007-03-10 | 2007-03-30 | PK000MU29S | 2007-03-10 | 2007-04-08 | 275d | 0d |  | EBWK - 3 - 7 Day Work Week | 2006-07-29 | 0 | 0 | 00 | PK | MU2 | 000 | PK | MU292 | MU | P |  | 50 | 2404L | NE |  | N | 11 | 25 | 30 | 45 | 03 |  |
| PK000MU30O | MU300 - Transport/Customes 2102-U |  | 30d | 2007-03-10 | 2007-03-30 | PK000MU30S | 2007-03-10 | 2007-04-08 | 108d | 0d |  | EBWK - 3 - 7 Day Work Week | 2006-07-29 | 0 | 0 | 00 | PK | MU3 | 000 | PK | MU300 | MU | P |  | 50 | 2102U | FE |  | N | 09 |  |  |  |  |  |
| PK000MU31O | MU310 - Transport/Customes Injection System & Chlorination Unit |  | 30d | 2007-03-10 | 2007-03-30 | PK000MU31S | 2007-03-10 | 2007-04-08 | 83d | 0d |  | EB00 - 3 - 7 Day Work Week | 2006-07-29 | 0 | 1.5 | 00 | PK | MU3 | 000 | PK | MU310 | MU | P |  | 50 |  | NE |  | N | 11 | 25 | 30 | 40 | 03 |  |
| PK000MU322 | MU322 Transport/Customes COOLING WTR FILTER & CLARIFIER |  | 30d | 2007-03-10 | 2007-03-30 | PK000MU32S | 2007-03-10 | 2007-04-08 | 101d | 0d |  | EB00 - 3 - 7 Day Work Week | 2006-07-29 | 0 | 0.8 | 00 | PK | MU3 | 000 | PK | MU322 | MU | P |  |  |  | NE |  | N |  | 25 | 30 | 35 | 03 |  |
| PK000MU33O | MU330 - Transport/Customes 2001-U |  | 30d | 2007-03-10 | 2007-03-30 | PK000MU33S | 2007-03-10 | 2007-04-08 | 157d | 0d |  | EBWK - 3 - 7 Day Work Week | 2006-07-29 | 0 | 0 | 00 | PK | MU3 | 000 | PK | MU330 | MU | P |  |  | 2001U | FE |  | N |  |  |  |  |  |  |
| ZZ2100 | MD304 - Transport/Customes 108-DA/B |  | 30d | 2007-03-10 | 2007-03-30 | PK000MD34T | 2007-03-10 | 2007-04-08 | 228d | 0d |  | EBWK - 3 - 7 Day Work Week | 2006-07-29 | 0 | 0 | 00 | PK | MD3 | 000 | PK | MD304 | MD | P |  | 50 | 108DA | CE |  | N | 11 |  |  |  |  |  |
| PK000MJ32O | MJ302 - Transport/Customes 107-JA/JB/JC |  | 30d | 2007-03-12 | 2007-03-30 | PK000MJ32S | 2007-03-12 | 2007-04-20 | 175d | 0d |  |  | 2006-07-29 | 0 | 0 | 00 | PK | MJ3 | 000 | PK | MJ302 | MJ | P |  |  | 107JA | FE |  | N |  |  |  |  |  |  |
| ZZ2110 | MC230 - Transport/Customes 107/111 |  | 30d | 2007-03-12 | 2007-03-30 | PK000MC23R FS+46d | 2007-03-12 | 2007-04-10 | 93d | 0d | start on or after 2007-03-12 | EBWK - 3 - 7 Day Work Week | 2006-07-29 | 0 | 0 | 00 | PK | MC2 | 000 | PK | MC230 | MC | P |  | 50 |  | PE |  | N | 11 |  |  |  |  |  |
| PK000I221L | 000 Everest Control Valves - Recv on Site | milestone | 0d | 2007-03-12 | 2007-03-12 | PK000I221N FF, CK000YA306 |  |  | 580d | 51d |  | EBWK 6 Day Egypt Holidays | 2006-07-29 | 0 | 0 | 00 | PK | I22 | 000 | PK | I2211 | I | P |  |  |  | IR | N | L |  |  |  |  |  |  |
| PK000PTA0K | Engineered Pipe Supports - Receive at Site | milestone | 0d | 2007-03-12 | 2007-03-12 | PK000PTA0J, CK000YA306 |  |  | 69d | 40d |  | EBWK 6 Day Egypt Holidays | 2006-07-29 | 0 | 0 | 00 | PK | P60 | 000 | PK | PTA02 | P | P |  |  |  |  |  | L |  |  |  |  |  |  |
| PK000MJ37W | MJ307 - Transport/Customes ISBL ANSI/API PUMP |  | 30d | 2007-03-13 | 2007-04-23 | PK000MJ37V |  |  | 192d | 0d |  |  | 2006-07-29 | 0 | 2.3 | 00 | PK | MJ3 | 000 | PK | MJ307 | MJ | P |  | 50 | 2100JA | CE |  | N | 11 | 25 | 30 | 40 | 03 |  |
| PK000ML50S | ML500 - Marshaling 2003-L PAI/IA |  | 40d | 2007-03-13 | 2007-04-06 | PK000ML50K | 2007-03-13 | 2007-05-07 | 78d | 0d |  |  | 2006-07-29 | 0 | 1.5 | 00 | PK | ML5 | 000 | PK | ML500 | ML | P | Planned to ship Mar, Slipped to Apr | 140 | 2003L | FE | Y | H | 13 | 30 | 40 | 50 | 03 |  |
| PK000MJ35O | MJ305 - Transport/Customes ISBL ANSI/API PUMPS |  | 30d | 2007-03-14 | 2007-04-24 | PK000MJ35S |  |  | 153d | 0d |  |  | 2006-07-29 | 0 | 0 | 00 | PK | MJ3 | 000 | PK | MJ305 | MJ | P |  | 50 |  | CE |  | N | 11 |  |  |  |  |  |
| PK010E008M | 540-SG Admin. Area Pwr Supply - Marshalling |  | 40d | 2007-03-14 | 2007-05-08 | PK010E008K, PK010E008L |  |  | 70d | 0d |  |  | 2006-07-29 | 0 | 0 | 00 | PK | EF5 | 000 | PK | E0008 | E | P |  |  |  |  |  | H |  | 30 | 40 | 45 | 03 |  |
| PK000MB62O | MB621 - Transport/Customes of 101-B ID & FD Fans |  | 30d | 2007-03-17 | 2007-04-06 | PK000MB62S | 2007-03-17 | 2007-04-15 | 301d | 0d |  | EBWK - 3 - 7 Day Work Week | 2006-07-29 | 0 | 0 | 00 | PK | MB6 | 000 | PK | MB621 | MB | P |  | 50 | 101BJ1 | CE |  | N |  |  |  |  |  |  |
| PK000MD31S | MD301 - Marshaling 103-D |  | 60d | 2007-03-20 | 2007-04-06 | PK000MD31K | 2007-03-20 | 2007-06-11 | 55d | 0d |  |  | 2006-07-29 | 0 | 0 | 00 | PK | MD3 | 000 | PK | MD301 | MD | P | HL, Foreign Ship, Plan to Ship in Apr | 280 | 103D | CE | HD | H | 13 |  |  |  |  |  |
| PK000I612N | Transport & Deliver - Differential Pressure Gauges |  | 50d | 2007-03-21 | 2007-05-29 | PK000I612H |  |  | 28d | 0d |  |  | 2006-07-29 | 0 | 0 | 00 | PK | I16 | 000 | PK | I1612 | I | P |  |  |  |  |  | N |  |  |  |  |  |  |
| PK000MJ71S | MJ731 - Marshaling EMERG PWR GENERATOR |  | 40d | 2007-03-26 | 2007-04-06 | PK000MJ71K | 2007-03-26 | 2007-05-18 | 70d | 0d |  |  | 2006-07-29 | 0 | 0 | 00 | PK | MJ7 | 000 | PK | MJ731 | MJ | P | Plan to ship Apr (tenitive) | 140 |  | PE |  | H | 13 |  |  |  |  |  |
| PK000PSA8J | 000 Relief Valves - Recv on Site | milestone | 0d | 2007-03-26 | 2007-03-26 | PK000PSA8H FF, CK000YA306 |  |  | 284d | 200d |  | EBWK 6 Day Egypt Holidays | 2006-07-29 | 0 | 0 | 00 | PK | I22 | 000 | PK | PSA08 | P | P |  |  |  | IR | N | L |  |  |  |  |  |  |
| PK000E001N | Sub Stations - Transport |  | 50d | 2007-04-02 | 2007-05-11 | PK000E001H, PK000E001Z | 2007-04-02 | 2007-06-08 | 62d | 0d |  |  | 2006-07-29 | 0 | 3.2 | 00 | PK | EF1 | 000 | PK | E0001 | E | P |  |  |  |  | CD | N |  | 20 | 30 | 35 | 03 | 50 |
| PK000MD22U | MD202 - Marshaling TOWERS 150-E |  | 40d | 2007-04-02 | 2007-04-06 | PK000MD22T | 2007-04-02 | 2007-05-25 | 100d | 0d |  |  | 2006-07-29 | 0 | 0 | 00 | PK | MD2 | 000 | PK | MD202 | MD | P | Plan to ship Apr (tenitive) | 160 | 150E | FE |  | H | 13 |  |  |  |  |  |
| PK000MJ33S | MJ303 - Marshaling CW PUMPS |  | 40d | 2007-04-02 | 2007-04-18 | PK000MJ33K | 2007-04-02 | 2007-05-25 | 27d | 0d |  |  | 2006-07-29 | 0 | 0 | 00 | PK | MJ3 | 000 | PK | MJ303 | MJ | P | Foreign Ship | 260 | 2202JA | FE |  | H | 13 |  |  |  |  |  |
| PK000MJ73S | MJ730 - Marshaling EMERG PWR GENERATOR |  | 40d | 2007-04-02 | 2007-04-06 | PK000MJ73K | 2007-04-02 | 2007-05-25 | 70d | 0d |  |  | 2006-07-29 | 0 | 0 | 00 | PK | MJ7 | 000 | PK | MJ730 | MJ | P | Plan to ship Apr (tenitive) | 140 | 2303J | PE |  | H | 13 |  |  |  |  |  |
| PK000md113 | MD305 Merc. Removal Bed 102-D - Marshaling |  | 10d | 2007-04-02 | 2007-04-06 | PK000MD110 | 2007-04-02 | 2007-04-13 | 157d | 0d |  |  | 2006-07-29 | 0 | 2.3 | 00 | PK | MD3 | 000 | PK | MD305 | MD | P | Plan to ship Apr (tenitive) | 50 |  | FE |  | N | 11 | 45 | 50 | 60 | 03 |  |
| PK020MC31D | MC312 - Marshaling 121-C |  | 60d | 2007-04-02 | 2007-04-06 | PK020MC31C | 2007-04-02 | 2007-06-22 | 90d | 0d | start on or after 2007-02-19 |  | 2006-07-29 | 0 | 0 | 00 | PK | MC3 | 000 | PK | MC312 | MC | P | HL, Foreign Ship, Plan to Ship in Apr | 300 | 121C | PE | HD | H | 13 |  |  |  |  |  |
| PK020MC31S | MC312 - Marshaling 120-C |  | 60d | 2007-04-02 | 2007-04-06 | PK020MC31K | 2007-04-02 | 2007-06-22 | 90d | 0d |  |  | 2006-07-29 | 0 | 0 | 00 | PK | MC3 | 000 | PK | MC312 | MC | P | HL, Foreign Ship, Plan to Ship in Apr | 300 | 120C | PE | HD | H | 13 |  |  |  |  |  |
| PK000MJ31O | MJ301 - Transport/Customes 104-J |  | 30d | 2007-04-04 | 2007-05-15 | PK000MJ31S |  |  | 168d | 0d |  |  | 2006-07-29 | 0 | 0 | 00 | PK | MJ3 | 000 | PK | MJ301 | MJ | P |  |  | 104J | FE |  | N |  |  |  |  |  |  |
| PK000MD22N | MD201- Marshaling 102-E |  | 40d | 2007-04-05 | 2007-04-06 | PK000MD21M | 2007-04-05 | 2007-05-30 | 62d | 0d |  |  | 2006-07-29 | 0 | 0 | 00 | PK | MD2 | 000 | PK | MD201 | MD | P | HL, Plan to ship Apr (tenitive) 230LF, TIGHT WINDOW | 280 | 102E | FE | HD | H | 12 |  |  |  |  |  |
| PK000MC32O | MC311 - Transport/Customes KBR S&T EXCH |  | 30d | 2007-04-05 | 2007-04-26 | PK000MC32S | 2007-04-05 | 2007-05-05 | 108d | 0d |  | EBWK - 3 - 7 Day Work Week | 2006-07-29 | 0 | 0 | 00 | PK | MC3 | 000 | PK | MC311 | MC | P |  | 50 |  | PE |  | N | 11 |  |  |  |  |  |
| PK000ML50O | ML500 - Transport/Customes 2003-L PAI/IA |  | 30d | 2007-04-07 | 2007-04-27 | PK000ML50S | 2007-04-07 | 2007-05-06 | 110d | 0d |  | EBWK - 3 - 7 Day Work Week | 2006-07-29 | 0 | 1 | 00 | PK | ML5 | 000 | PK | ML500 | ML | P |  | 50 | 2003L | FE |  | N | 11 | 25 | 30 | 40 | 03 |  |
| PK000MD111 | MD305 Merc. Removal Bed - Transport & Deliver |  | 50d | 2007-04-09 | 2007-06-01 | PK000MD110, PK000md113 | 2007-04-09 | 2007-06-15 | 157d | 0d |  |  | 2006-07-29 | 0 | 2.3 | 00 | PK | MD3 | 000 | PK | MD305 | MD | P |  | 50 |  | FE |  | N | 11 | 45 | 50 | 60 | 03 |  |
| PK000MD211 | MD201 - Transport/Customes 102-E |  | 30d | 2007-04-09 | 2007-05-18 | PK000MD22N |  |  | 62d | 0d |  |  | 2006-07-29 | 0 | 0 | 00 | PK | MD2 | 000 | PK | MD201 | MD | P |  | 40 | 102E | FE | HD | N | 12 |  |  |  |  |  |
| PK000MD22V | MD202 - Transport/Customes TOWERS 150-E |  | 30d | 2007-04-09 | 2007-06-01 | PK000MD22U | 2007-04-09 | 2007-05-18 | 100d | 0d |  |  | 2006-07-29 | 0 | 0 | 00 | PK | MD2 | 000 | PK | MD202 | MD | P |  | 50 | 150E | FE |  | N | 11 |  |  |  |  |  |
| PK000MD31O | MD301 - Transport/Customes 103-D |  | 20d | 2007-04-09 | 2007-05-04 | PK000MD31S |  |  | 55d | 0d |  |  | 2006-07-29 | 0 | 0 | 00 | PK | MD3 | 000 | PK | MD301 | MD | P |  | 40 | 103D | CE | HD | N | 11 |  |  |  |  |  |
| PK000MJ71O | MJ731 - Transport/Customes EMERG PWR GENERATOR |  | 30d | 2007-04-09 | 2007-05-18 | PK000MJ71S |  |  | 70d | 0d |  |  | 2006-07-29 | 0 | 0 | 00 | PK | MJ7 | 000 | PK | MJ731 | MJ | P |  | 50 |  | PE |  | N | 11 |  |  |  |  |  |
| PK000MJ73O | MJ730 - Transport/Customes EMERG PWR GENERATOR |  | 30d | 2007-04-09 | 2007-05-18 | PK000MJ73S |  |  | 70d | 0d |  |  | 2006-07-29 | 0 | 0 | 00 | PK | MJ7 | 000 | PK | MJ730 | MJ | P |  | 50 | 2303J | PE |  | N | 11 |  |  |  |  |  |
| PK000PIA1O | Bulk Piping A/G - Transport / Delivery (FINAL) |  | 25d | 2007-04-09 | 2007-05-11 | PK000PIA1N |  |  | 45d | 0d |  |  | 2006-07-29 | 0 | 0 | 00 | PK | P00 | 000 | PK | PIA11 | P | P |  | 50 |  |  |  | N | 01 | 20 | 25 | 30 | 02 |  |
| PK020MC31J | MC312 - Transport/Customes 121-C |  | 20d | 2007-04-09 | 2007-05-04 | PK020MC31D |  |  | 90d | 0d |  |  | 2006-07-29 | 0 | 0 | 00 | PK | MC3 | 000 | PK | MC312 | MC | P |  | 50 | 121C |  | HD | N | 11 |  |  |  |  |  |

Notes:
- PK000ML90O: P3 Activity Log Info: Includes Ship to Dock; Load; Sea Freight; / Unload Customs; Ship to Site
- PK000MB51O: P3 Activity Log Info: Includes Ship to Dock; Load; Sea Freight; / Unload Customs; Ship to Site
- PK000MJ22O: P3 Activity Log Info: Includes Ship to Dock; Load; Sea Freight; / Unload Customs; Ship to Site
- PK000MJ36O: P3 Activity Log Info: Includes Ship to Dock; Load; Sea Freight; / Unload Customs; Ship to Site
- PK000MJ38W: P3 Activity Log Info: Includes Ship to Dock; Load; Sea Freight; / Unload Customs; Ship to Site
- PK000MJ39O: P3 Activity Log Info: Includes Ship to Dock; Load; Sea Freight; / Unload Customs; Ship to Site
- PK000MJ34O: P3 Activity Log Info: Includes Ship to Dock; Load; Sea Freight; / Unload Customs; Ship to Site
- PK000MB71O: P3 Activity Log Info: Includes Ship to Dock; Load; Sea Freight; / Unload Customs; Ship to Site
- PK000MD21O: P3 Activity Log Info: Includes Ship to Dock; Load; Sea Freight; / Unload Customs; Ship to Site
- PK000MD32O: P3 Activity Log Info: Includes Ship to Dock; Load; Sea Freight; / Unload Customs; Ship to Site
- PK000MD34O: P3 Activity Log Info: Includes Ship to Dock; Load; Sea Freight; / Unload Customs; Ship to Site
- PK000MD41O: P3 Activity Log Info: Includes Ship to Dock; Load; Sea Freight; / Unload Customs; Ship to Site / user_text1: L&T order, delays due to flooding.
- PK000MD44V: P3 Activity Log Info: Includes Ship to Dock; Load; Sea Freight; / Unload Customs; Ship to Site
- PK000MU29O: P3 Activity Log Info: Includes Ship to Dock; Load; Sea Freight; / Unload Customs; Ship to Site
- PK000MU30O: P3 Activity Log Info: Includes Ship to Dock; Load; Sea Freight; / Unload Customs; Ship to Site
- PK000MU31O: P3 Activity Log Info: Includes Ship to Dock; Load; Sea Freight; / Unload Customs; Ship to Site
- PK000MU33O: P3 Activity Log Info: Includes Ship to Dock; Load; Sea Freight; / Unload Customs; Ship to Site
- ZZ2100: P3 Activity Log Info: Includes Ship to Dock; Load; Sea Freight; / Unload Customs; Ship to Site
- PK000MJ32O: P3 Activity Log Info: Includes Ship to Dock; Load; Sea Freight; / Unload Customs; Ship to Site
- PK000MJ37W: P3 Activity Log Info: Includes Ship to Dock; Load; Sea Freight; / Unload Customs; Ship to Site
- PK000MJ35O: P3 Activity Log Info: Includes Ship to Dock; Load; Sea Freight; / Unload Customs; Ship to Site
- PK000MB62O: P3 Activity Log Info: Includes Ship to Dock; / Load; Sea Freight; Unload Customs; Ship to Site
- PK000MD31S: user_text1: L&T order, delays due to flooding. Tube Sheet inspection is rejected.
- PK020MC31D: user_text1: L&T order, delays due to flooding.
- PK020MC31S: user_text1: L&T order, delays due to flooding.
- PK000MJ31O: P3 Activity Log Info: Includes Ship to Dock; Load; Sea Freight; / Unload Customs; Ship to Site
- PK000MC32O: P3 Activity Log Info: Includes Ship to Dock; Load; Sea Freight; / Unload Customs; Ship to Site
- PK000ML50O: P3 Activity Log Info: Includes Ship to Dock; Load; Sea Freight; / Unload Customs; Ship to Site
- PK000MD111: P3 Activity Log Info: Includes Ship to Dock; Load; Sea Freight; / Unload Customs; Ship to Site
- PK000MD211: P3 Activity Log Info: Includes Ship to Dock; Load; Sea Freight; / Unload Customs; Ship to Site
- PK000MD22V: P3 Activity Log Info: Includes Ship to Dock; Load; Sea Freight; / Unload Customs; Ship to Site
- PK000MD31O: P3 Activity Log Info: Includes Ship to Dock; Load; Sea Freight; / Unload Customs; Ship to Site / user_text1: L&T order, delays due to flooding. Tube Sheet inspection is rejected.
- PK000MJ71O: P3 Activity Log Info: Includes Ship to Dock; Load; Sea Freight; / Unload Customs; Ship to Site
- PK000MJ73O: P3 Activity Log Info: Includes Ship to Dock; Load; Sea Freight; / Unload Customs; Ship to Site
- PK020MC31J: P3 Activity Log Info: Includes Ship to Dock; Load; Sea Freight; / Unload Customs; Ship to Site / user_text1: L&T order, delays due to flooding.

| ID | WBS | Activity | Type | Duration | Start | Finish | Predecessors | Complete | Planned start | Planned finish | Total float | Free float | Constraint | Calendar | zData Date | PCA Criticality Index | PCA Duration Sensitivity | user_integer2 | user_text1 | EB02 - UNIT | EB01 - RESP | EB06 - WORK OP | EB03 - AREA | EB05 - DISCIPLINE | EB07 - REQN | EB08 - TAG | EB04 - CLASS | EB11 - FLAG | EB09 - IPMS | EB00 - EPC | EB14 - RISK | EB10 - KEY | zComments | Optimistic Duration | Most Likely Duration | Pessimistic Duration | EB21 - Rev 2 Risk Associations | EB22 - Critical Actvities | Vendor | Ship From | EB12 - TEMP |
| --- | --- | --- | --- | --- | --- | --- | --- | --- | --- | --- | --- | --- | --- | --- | --- | --- | --- | --- | --- | --- | --- | --- | --- | --- | --- | --- | --- | --- | --- | --- | --- | --- | --- | --- | --- | --- | --- | --- | --- | --- | --- |
| PK020MC31L |  | MC312 - Transport/Customes 120-C |  | 20d | 2007-04-09 | 2007-05-04 | PK020MC31S |  |  |  | 90d | 0d |  |  | 2006-07-29 | 0 | 0 | 50 | L&T order, delays due to flooding. | 00 | PK | MC3 | 000 | PK | MC312 | 120C | MC | HD | N | P | 11 |  |  |  |  |  |  |  |  |  |  |
| PK000PS00J |  | 000 SP Items - Recv on Site | milestone | 0d | 2007-04-09 | 2007-04-09 | PK000PS00H FF, CK000YA306 |  |  |  | 272d | 188d |  | EBWK 6 Day Egypt Holidays | 2006-07-29 | 0 | 0 |  |  | 00 | PK | P90 | 000 | PK | PS000 |  | P | N | L | P |  | IR |  |  |  |  |  |  |  |  |  |
| PK000MD43S |  | MD403 - Marshaling 106-F |  | 60d | 2007-04-11 | 2007-05-25 | PK000MD43K |  | 2007-04-11 | 2007-07-03 | 135d | 0d |  |  | 2006-07-29 | 0 | 0 | 250 | L&T order, delays due to flooding. | 00 | PK | MD4 | 000 | PK | MD403 | 106F | MD |  | H | P | 13 | CE | Foreign Ship, Planned to Ship in May, Slipped to Jun |  |  |  |  |  |  |  |  |
| PK000I621N |  | Transport & Deliver - Temperature Elements |  | 50d | 2007-04-13 | 2007-05-14 | PK000I621H |  | 2007-04-13 | 2007-06-21 | 39d | 9d | start on or after 2007-01-02 |  | 2006-07-29 | 0 | 0 |  |  | 00 | PK | I16 | 000 | PK | I1621 |  | I |  | N | P |  |  |  |  |  |  |  |  |  |  |  |
| PK000MJ33O |  | MJ303 - Transport/Customes CW PUMPS |  | 30d | 2007-04-19 | 2007-05-30 | PK000MJ33S |  |  |  | 27d | 0d |  |  | 2006-07-29 | 0 | 0 | 50 |  | 00 | PK | MJ3 | 000 | PK | MJ303 | 2202JA | MJ |  | N | P | 11 | FE |  |  |  |  |  |  |  |  |  |
| PK000MD33S |  | MD303 - Marshaling 105-D |  | 60d | 2007-04-20 | 2007-05-11 | PK000MD33K |  | 2007-04-20 | 2007-07-12 | 50d | 0d |  |  | 2006-07-29 | 0 | 0 | 310 | L&T order, delays due to flooding. | 00 | PK | MD3 | 000 | PK | MD303 | 105D | MD | HD | H | P | 13 | FE | HL, Foreign Ship |  |  |  |  |  |  |  |  |
| PK000MD42S |  | MD402 -Marshaling 102-F1, 102-F2 |  | 40d | 2007-04-23 | 2007-04-27 | PK000MD42K |  | 2007-04-23 | 2007-06-15 | 130d | 0d |  |  | 2006-07-29 | 0 | 0 | 175 |  | 00 | PK | MD4 | 000 | PK | MD402 |  | MD |  | H | P | 13 | CE | Planned to ship Apr, Slipped to May |  |  |  |  |  |  |  |  |
| PK000MD42O |  | MD402 - Transport/Customes 102-F1, 102-F2 |  | 30d | 2007-04-30 | 2007-06-08 | PK000MD42S |  |  |  | 130d | 0d |  |  | 2006-07-29 | 0 | 0 | 50 |  | 00 | PK | MD4 | 000 | PK | MD402 |  | MD |  | N | P | 11 | CE |  |  |  |  |  |  |  |  |  |
| PK000E002N |  | Transformer - Transport |  | 30d | 2007-05-02 | 2007-06-12 | PK000E002X |  |  |  | 28d | 0d |  |  | 2006-07-29 | 0 | 0.4 |  |  | 00 | PK | EF5 | 000 | PK | E0002 |  | E |  | N | P |  |  |  | 25 | 30 | 35 | 03 |  |  |  |  |
| PK000E004N |  | UPS System - Transport |  | 30d | 2007-05-03 | 2007-06-13 | PK000E004X |  |  |  | 27d | 0d |  |  | 2006-07-29 | 7.6 | 5.3 |  |  | 00 | PK | EF6 | 000 | PK | E0004 |  | E |  | N | P |  |  |  | 20 | 30 | 35 | 03 |  |  |  |  |
| PK010E008N |  | 540-SG Admin. Area Pwr Supply - Transport |  | 30d | 2007-05-09 | 2007-06-19 | PK010E008M |  |  |  | 70d | 0d |  |  | 2006-07-29 | 0 | 0 |  |  | 00 | PK | EF5 | 000 | PK | E0008 |  | E |  | N | P |  |  |  | 25 | 30 | 35 | 03 |  |  |  |  |
| PK000I444L |  | Recv at Site - Shelters/ Analyzers | milestone | 0d | 2007-05-12 | 2007-05-12 | PK000I444N, CK000YA306 |  |  |  | 171d | 94d |  | EBWK 6 Day Egypt Holidays | 2006-07-29 | 0 | 0 |  |  | 00 | PK | I44 | 000 | PK | I4440 |  | I | C | L | P |  |  |  |  |  |  | 03 |  |  |  |  |
| PK000I9000 |  | Receive Instruments at Site | milestone | 0d | 2007-05-12 | 2007-05-12 | PK020IC220 FF, PK000I2335 FF, PK000I1105 FF, PK000I1141 FF, PK000I1163 FF, PK000I1272 FF, PK000I1222 FF, PK010I1105 FF, PK050I1105 FF, PK030I1105 FF, PK010I1152 FF, PK010I1212 FF, PK010I1242 FF, PK010IC220 FF, PK030IC220 FF, PK010IC272 FF, PK000I221L FF, CK000YA306 |  |  |  | 529d | 0d |  | EBWK 6 Day Egypt Holidays | 2006-07-29 | 0 | 0 |  |  | 00 | PK | I00 | 000 | PK |  |  | I |  | L | P |  |  |  |  |  |  |  |  |  |  |  |
| PK000PIA1P |  | Bulk Piping A/G - Receive at Site (FINAL) | milestone | 0d | 2007-05-12 | 2007-05-12 | PK000PIA1O, PK000PIA1L, CK000YA306 |  |  |  | 56d | 0d |  | EBWK 6 Day Egypt Holidays | 2006-07-29 | 0 | 0 | 0 |  | 00 | PK | P00 | 000 | PK | PIA11 |  | P |  | L | P |  |  |  |  |  |  |  |  |  |  |  |
| PK000MD33O |  | MD303 - Transport/Customes 105-D |  | 20d | 2007-05-14 | 2007-06-08 | PK000MD33S |  |  |  | 50d | 0d |  |  | 2006-07-29 | 0 | 0 | 40 | L&T order, delays due to flooding. | 00 | PK | MD3 | 000 | PK | MD303 | 105D | MD | HD | N | P | 11 | FE |  |  |  |  |  |  |  |  |  |
| PK000MD43O |  | MD403 - Transport/Customs 106-F |  | 20d | 2007-05-28 | 2007-06-22 | PK000MD43S |  |  |  | 135d | 0d |  |  | 2006-07-29 | 0 | 0 | 50 | L&T order, delays due to flooding. | 00 | PK | MD4 | 000 | PK | MD403 | 106F | MD |  | N | P | 11 | CE |  |  |  |  |  |  |  |  |  |
| PK000E004L |  | UPS System - Receive at Site | milestone | 0d | 2007-06-13 | 2007-06-13 | PK000E004N |  |  |  | 33d | 0d |  | EBWK 6 Day Egypt Holidays | 2006-07-29 | 8.7 | 0 |  |  | 00 | PK | EF6 | 000 | PK | E0004 |  | E |  | L | P |  |  |  |  |  |  | 03 |  |  |  |  |
| PK010E008P |  | 540-SG Admin. Area Pwr Supply - Receive at Site | milestone | 0d | 2007-06-19 | 2007-06-19 | PK010E008N |  |  |  | 78d | 45d |  | EBWK 6 Day Egypt Holidays | 2006-07-29 | 0 | 0 |  |  | 00 | PK | EF5 | 000 | PK | E0008 |  | E |  | L | P |  |  |  |  |  |  | 03 |  |  |  |  |
| PK000MC31S |  | MC310 - Marshaling 101-C & 102-C (Heavy Lift) |  | 52d | 2007-07-31 | 2007-07-31 | PK000MC31K |  | 2007-07-31 | 2007-10-10 | 8d | 0d |  |  | 2006-07-29 | 4.7 | 0.8 | 230 | L&T order, delays due to flooding. | 00 | PK | MC3 | 000 | PK | MC310 |  | MC | HD | H | P | 13 | PE | HL, Foreign Ship | 40 | 60 | 70 |  |  |  |  |  |
| PK000MC31O |  | MC310 - Transport/Customes 101-C & 102-C (Heavy Lift) |  | 30d | 2007-08-01 | 2007-08-28 | PK000MC31S |  | 2007-08-01 | 2007-09-11 | 8d | 0d |  |  | 2006-07-29 | 4.7 | 2.5 |  | L&T order, delays due to flooding. | 00 | PK | MC3 | 000 | PK | MC310 |  | MC | HD | N | P |  | PE |  | 20 | 30 | 35 |  |  |  |  |  |
| PK000PR20J |  | PR201 KAAP Catalyst - Transport & Deliver |  | 50d | 2007-12-04 | 2008-02-11 | PK000PR20H |  |  |  | 26d | 0d |  |  | 2006-07-29 | 0 | 0 | 50 |  | 00 | PK | MB2 | 000 | PK | PR201 |  | MB |  | N | P |  | CE |  |  |  |  |  | C4 |  |  |  |
|  | 01 | **Offsites** |  |  | 2006-07-24 | 2007-06-12 |  |  |  |  |  |  |  |  |  |  |  |  |  |  |  |  |  |  |  |  |  |  |  |  |  |  |  |  |  |  |  |  |  |  |  |
| PK01DMU61Z |  | 01D Recv. at Site - 2101-U, 2101-UJA Thru UJG CW TWR & Fans | milestone | 0d | 2006-07-24 A | 2006-07-24 A | PK000MU61O, CK000YA306, CK000YA306 FF | 100% |  |  |  |  |  | EBWK 6 Day Egypt Holidays | 2006-07-29 | 0 | 0 |  |  | 01 | PK | MU6 | 01D | PK | MU611 | 2101U | M |  | L | P |  | PE |  |  |  |  |  |  | MAR | HOU |  |
| ZZ1020 |  | 01D Recv. at Site - 2101-UJA Thru UJGM CW Motors | milestone | 0d | 2006-07-24 A | 2006-07-24 A | ZZ1040, CK000YA306, CK000YA306 FF | 100% |  |  |  |  |  | EBWK 6 Day Egypt Holidays | 2006-07-29 | 0 | 0 |  |  | 01 | PK | MU6 | 01D | PK | MU611 | 2101U | M |  | L | P |  | PE |  |  |  |  |  |  | MAR | GER |  |
| PK010I1242 |  | Rotameters - Recv on Site | milestone | 0d | 2006-08-16 A | 2006-08-16 A | PK010I1241 FF, CK000YA306 | 100% | 2007-04-21 | 2007-04-21 |  |  |  | EBWK 6 Day Egypt Holidays | 2006-07-29 | 0 | 0 |  |  | 01 | PK | I21 | 010 | PK | I2124 |  | I | N | L | P |  | IR |  |  |  |  |  |  |  |  |  |
| PK010I1105 |  | 010 Orific Plates - Recv on Site | milestone | 0d | 2006-12-07 A | 2006-12-07 A | PK010I1103 FF, CK000YA306, CK000YA306 FF | 100% | 2007-01-27 | 2007-01-27 |  |  |  | EBWK 6 Day Egypt Holidays | 2006-07-29 | 0 | 0 |  |  | 01 | PK | I21 | 010 | PK | I2110 |  | I | N | L | P |  | IR |  |  |  |  |  |  |  |  |  |
| PK01GMU21Z |  | 01E Recv. at Site - Lift Station | milestone | 0d | 2006-12-12 A | 2006-12-12 A | PK000MU21O, CK000YA306, CK000YA306 FF | 100% | 2007-01-06 | 2007-01-06 |  |  |  | EBWK 6 Day Egypt Holidays | 2006-07-29 | 0 | 0 |  |  | 01 | PK | MU2 | 01E | PK | MU221 |  | M |  | L | P |  | NE |  |  |  |  |  |  | SD | HOU | L1 |
| PK010IC220 |  | 010 Control Valves - Recv on Site | milestone | 0d | 2006-12-29 A | 2006-12-29 A | PK010IC214 FF, CK000YA306 | 100% | 2007-01-27 | 2007-01-27 |  |  |  | EBWK 6 Day Egypt Holidays | 2006-07-29 | 0 | 0 |  |  | 01 | PK | I22 | 010 | PK | I2210 |  | I | N | L | P |  | IR |  |  |  |  |  |  |  |  |  |
| PK01FMU21Z |  | 01E Recv. at Site - 2402-L Lift Station | milestone | 0d | 2007-01-12 A | 2007-01-12 A | PK000MU21O, CK000YA306, CK000YA306 FF | 100% | 2007-01-30 | 2007-01-30 |  |  |  | EBWK 6 Day Egypt Holidays | 2006-07-29 | 0 | 0 |  |  | 01 | PK | MU2 | 01E | PK | MU221 | 2402L | M |  | L | P |  | NE |  |  |  |  |  |  | SD | HOU |  |
| PK010I1212 |  | Vortex Meters - Recv on Site | milestone | 0d | 2007-01-30 | 2007-01-30 | PK010I1211 FF, CK000YA306 |  |  |  | 615d | 86d |  | EBWK 6 Day Egypt Holidays | 2006-07-29 | 0 | 0 |  |  | 01 | PK | I21 | 010 | PK | I2121 |  | I | N | L | P |  | IR |  |  |  |  |  |  |  |  |  |
| PK010I1152 |  | Annubars - Recv on Site | milestone | 0d | 2007-03-05 | 2007-03-05 | PK010I1151 FF, CK000YA306 |  |  |  | 586d | 57d |  | EBWK 6 Day Egypt Holidays | 2006-07-29 | 0 | 0 |  |  | 01 | PK | I21 | 010 | PK | I2115 |  | I | N | L | P |  | IR |  |  |  |  |  |  |  |  |  |
| PK01GIC35L |  | DCS - Receive at Site | milestone | 0d | 2007-03-10 | 2007-03-10 | PK000IC35N, CK000YA306 |  |  |  | 104d | 118d |  | EBWK 6 Day Egypt Holidays | 2006-07-29 | 0 | 0 | 0 |  | 00 | PK | I35 | 000 | PK | I3510 |  | I | PS | L | P |  |  |  |  |  |  | 03 |  |  |  |  |
| PK000ML90Z |  | 01A ML900 - Recv. at Site - Evap. Pond Spray Nzl. | milestone | 0d | 2007-03-24 | 2007-03-24 | PK000ML90O, CK000YA306, CK000YA306 FF |  |  |  | 125d | 30d |  | EBWK 6 Day Egypt Holidays | 2006-07-29 | 0 | 0 |  |  | 01 | PK | ML9 | 01A | PK | ML900 |  | M |  | L | P |  | FE |  |  |  |  |  |  | SN |  |  |
| PK03FMU32Z |  | MU322 Recv. at Site - COOLING WTR FILTER & CLARIFIER | milestone | 0d | 2007-03-30 | 2007-03-30 | PK000MU322 |  |  |  | 71d | 43d |  | EBWK - Global | 2006-07-29 | 0 | 0 |  |  | 01 | PK | MU3 | 01D | PK | MU322 |  | M |  | L | P |  | NE |  |  |  |  | 03 |  | G |  |  |
| PK030I131L |  | Recv at Site - Transmitters -Temp. | milestone | 0d | 2007-03-31 | 2007-03-31 | PK030I131H FS+30d, PK030I131N |  |  |  | 86d | 66d |  | EBWK 6 Day Egypt Holidays | 2006-07-29 | 0 | 0 |  |  | 01 | PK | I13 | 010 | PK | I1310 |  | I | C | L | P |  |  |  |  |  |  |  |  |  |  |  |
| PK01BMU30Z |  | 01C Recv. at Site - 2102-U EDR Unit | milestone | 0d | 2007-03-31 | 2007-03-31 | PK000MU30O, CK000YA306, CK000YA306 FF |  |  |  | 93d | 0d |  | EBWK 6 Day Egypt Holidays | 2006-07-29 | 0 | 0 |  |  | 01 | PK | MU3 | 01C | PK | MU300 | 2102U | M |  | L | P |  | FE |  |  |  |  |  |  | GE | HOU |  |
| PK01BMJ36Z |  | 01B Recv. at Site - 2001-JA/JB/JC, 2004-J/JA, 2007J/JA | milestone | 0d | 2007-04-14 | 2007-04-14 | PK000MJ36O, CK000YA306 |  |  |  | 73d | 41d |  | EBWK 6 Day Egypt Holidays | 2006-07-29 | 6.4 | 0 |  |  | 01 | PK | MJ3 | 01B | PK | MJ305 |  | M |  | L | P |  | PE |  |  |  |  |  |  | GO | HOU |  |
| PK01BMJ39Z |  | Recv. at Site - Firewater Pumps | milestone | 0d | 2007-04-14 | 2007-04-14 | PK000MJ39O, CK000YA306 |  |  |  | 73d | 41d |  | EBWK 6 Day Egypt Holidays | 2006-07-29 | 0 | 0 |  |  | 01 | PK | MJ3 | 01B | PK | MJ391 | 2204J | M |  | L | P |  | PE |  |  |  |  | 03 |  | PPP |  |  |
| PK030I611L |  | Recv at Site - Pressure Gauges - OSBL | milestone | 0d | 2007-04-18 | 2007-04-18 | PK030I611H FS+30d, PK030I611N |  |  |  | 70d | 50d |  | EBWK 6 Day Egypt Holidays | 2006-07-29 | 0 | 0 |  |  | 01 | PK | I16 | 010 | PK | I1611 |  | I | C | L | P |  |  |  |  |  |  |  |  |  |  |  |
| PK010IC272 |  | MOV Valves - Recv on Site | milestone | 0d | 2007-04-21 | 2007-04-21 | PK010IC262 FF, CK000YA306 |  |  |  | 547d | 18d |  | EBWK 6 Day Egypt Holidays | 2006-07-29 | 0 | 0 |  |  | 01 | PK | I22 | 010 | PK | I2220 |  | I | N | L | P |  | IR |  |  |  |  |  |  |  |  |  |
| PK01GI352L |  | SIS - Receive at Site | milestone | 0d | 2007-04-21 | 2007-04-21 | PK000I352N, CK000YA306 |  |  |  | 68d | 82d |  | EBWK 6 Day Egypt Holidays | 2006-07-29 | 0 | 0 | 0 |  | 00 | PK | I35 | 000 | IC | I3520 |  | I | PS | L | P |  |  |  |  |  |  | 03 |  |  |  |  |
| PK01GI354L |  | ITCC - Receive at Site | milestone | 0d | 2007-04-21 | 2007-04-21 | PK000I354N, CK000YA306 |  |  |  | 68d | 82d |  | EBWK 6 Day Egypt Holidays | 2006-07-29 | 0 | 0 | 0 |  | 01 | PK | I35 | 000 | IC | I3542 |  | I | PS | L | P |  |  |  |  |  |  |  |  |  |  |  |
| PK01HE001L |  | Sub Stations - Receive at Site | milestone | 0d | 2007-05-12 | 2007-05-12 | PK000E001N, CK000YA306 |  |  |  | 76d | 0d |  | EBWK 6 Day Egypt Holidays | 2006-07-29 | 0 | 0 |  |  | 01 | PK | EF1 | 01H | PK | E0001 |  | E |  | L | P |  |  |  |  |  |  | 03 |  |  |  |  |
| PK01HMJ73Z |  | 01H Recv. at Site - 2303-J Emerg Power Generator | milestone | 0d | 2007-05-19 | 2007-05-19 | PK000MJ73O, CK000YA306 |  |  |  | 86d | 0d |  | EBWK 6 Day Egypt Holidays | 2006-07-29 | 0 | 0 |  |  | 01 | PK | MJ7 | 01H | PK | MJ730 | 2303J | M |  | L | P |  | PE |  |  |  |  |  |  | SO | HOU |  |
| PK01BMJ33Z |  | 01B Recv. at Site - 2007-J/JA Cooling Wtr Makeup Pumps | milestone | 0d | 2007-05-30 | 2007-05-30 | PK000MJ33O, CK000YA306 |  |  |  | 32d | 0d |  | EBWK 6 Day Egypt Holidays | 2006-07-29 | 0 | 0 |  |  | 01 | PK | MJ3 | 01B | PK | MJ305 | 2007J | M |  | L | P |  | FE |  |  |  |  |  |  | GO | HOU |  |
| PK01DMJ33Z |  | 01D Recv. at Site - Equip. 2202-JA/B/C | milestone | 0d | 2007-05-30 | 2007-05-30 | PK000MJ33O |  |  |  | 28d | 0d |  |  | 2006-07-29 | 0 | 0 |  |  | 01 | PK | MJ3 | 01D | PK | MJ303 | 2202JA | M |  | L | P |  | FE |  |  |  |  |  |  | F | ITA |  |
| PK01HE002L |  | Transformer - Receive at Site | milestone | 0d | 2007-06-12 | 2007-06-12 | PK000E002N, CK000YA306 |  |  |  | 34d | 1d |  | EBWK 6 Day Egypt Holidays | 2006-07-29 | 0 | 0 |  |  | 01 | PK | EF5 | 01H | PK | E0002 |  | E |  | L | P |  |  |  |  |  |  | 03 |  |  |  |  |

Notes:
- PK020MC31L: P3 Activity Log Info: Includes Ship to Dock; Load; Sea Freight; / Unload Customs; Ship to Site
- PK000MJ33O: P3 Activity Log Info: Includes Ship to Dock; Load; Sea Freight; / Unload Customs; Ship to Site
- PK000MD42O: P3 Activity Log Info: Includes Ship to Dock; Load; Sea Freight; / Unload Customs; Ship to Site
- PK000MD33O: P3 Activity Log Info: Includes Ship to Dock; Load; Sea Freight; / Unload Customs; Ship to Site
- PK000MD43O: P3 Activity Log Info: Includes Ship to Dock; Load; Sea Freight; / Unload Customs; Ship to Site
- PK000MC31O: P3 Activity Log Info: Includes Ship to Dock; Load; Sea Freight; / Unload Customs; Ship to Site
- PK000PR20J: P3 Activity Log Info: Includes Ship to Dock; Load; Sea Freight; / Unload Customs; Ship to Site

| ID | WBS | Activity | Type | Duration | Start | Finish | Predecessors | Complete | Planned start | Planned finish | Total float | Free float | Calendar | zData Date | PCA Criticality Index | PCA Duration Sensitivity | EB02 - UNIT | EB01 - RESP | EB06 - WORK OP | EB03 - AREA | EB05 - DISCIPLINE | EB07 - REQN | EB08 - TAG | EB10 - KEY | EB04 - CLASS | EB09 - IPMS | EB00 - EPC | Vendor | Ship From | EB11 - FLAG | EB21 - Rev 2 Risk Associations | Optimistic Duration | Most Likely Duration | Pessimistic Duration | user_integer1 | zComments |
| --- | --- | --- | --- | --- | --- | --- | --- | --- | --- | --- | --- | --- | --- | --- | --- | --- | --- | --- | --- | --- | --- | --- | --- | --- | --- | --- | --- | --- | --- | --- | --- | --- | --- | --- | --- | --- |
|  | 03 | **Utility Plant** |  |  | 2006-09-16 | 2007-04-28 |  |  |  |  |  |  |  |  |  |  |  |  |  |  |  |  |  |  |  |  |  |  |  |  |  |  |  |  |  |  |
| PK03CMD46Z |  | 03C Recv. at Site - 2203-F & 2204-F Caustic Tank/ Acid Drum | milestone | 0d | 2006-09-16 A | 2006-09-16 A | PK000MD46O, CK000YA306, CK000YA306 FF | 100% | 2006-09-21 | 2006-09-21 |  |  | EBWK 6 Day Egypt Holidays | 2006-07-29 | 0 | 0 | 03 | PK | MD4 | 03C | PK | MD411 | 2203F | PE | M | L | P | JW | HOU |  |  |  |  |  |  |  |
| PK03FMU41Z |  | 03F Recv. at Site - 2002-U Package Boiler | milestone | 0d | 2006-10-31 A | 2006-10-31 A | PK000MU41O, CK000YA306 | 100% | 2006-10-28 | 2006-10-28 |  |  | EBWK 6 Day Egypt Holidays | 2006-07-29 | 0 | 0 | 03 | PK | MU4 | 03F | PK | MU410 | 2002U | PE | M | L | P | R | HOU |  |  |  |  |  |  |  |
| PK03BMU22Z |  | 03B Recv. at Site - 2401-U Sanitary Treatment Pkg | milestone | 0d | 2006-12-08 A | 2006-12-08 A | PK000MU22O, CK000YA306, CK000YA306 FF | 100% | 2007-01-27 | 2007-01-27 |  |  | EBWK 6 Day Egypt Holidays | 2006-07-29 | 0 | 0 | 03 | PK | MU2 | 03B | PK | MU222 | 2401U | NE | M | L | P | SD | HOU |  |  |  |  |  |  |  |
| PK03FMD46Z |  | 03F Recv. at Site - 2006-F Boiler Blowdown Drum | milestone | 0d | 2006-12-09 A | 2006-12-09 A | CK000YA306, PK000MD46V | 100% | 2007-01-20 | 2007-01-20 |  |  | EBWK 6 Day Egypt Holidays | 2006-07-29 | 0 | 0 | 03 | PK | MD4 | 03F | PK | MD411 | 2006F | PE | M | L | P | JW | HOU |  |  |  |  |  |  |  |
| PK030IC220 |  | 030 Control Valves - Recv on Site | milestone | 0d | 2006-12-29 A | 2006-12-29 A | PK030IC214 FF, CK000YA306 | 100% | 2007-05-24 | 2007-05-24 |  |  | EBWK 6 Day Egypt Holidays | 2006-07-29 | 0 | 0 | 03 | PK | I22 | 030 | PK | I2210 |  | IR | I | L | P |  |  | N |  |  |  |  |  |  |
| PK030I1105 |  | Orific Plates - Recv on Site | milestone | 0d | 2007-02-26 | 2007-02-26 | PK030I1103 FF |  |  |  | 592d | 63d | EBWK 6 Day Egypt Holidays | 2006-07-29 | 0 | 0 | 03 | PK | I21 | 030 | PK | I2110 |  | IR | I | L | P |  |  | N |  |  |  |  |  |  |
| PK03BMU29Z |  | 03B Recv. at Site - 2404-L Oil Skimmer | milestone | 0d | 2007-03-31 | 2007-03-31 | PK000MU29O, CK000YA306 |  |  |  | 212d | 0d | EBWK 6 Day Egypt Holidays | 2006-07-29 | 0 | 0 | 03 | PK | MU2 | 03B | PK | MU292 | 2404L | NE | M | L | P | OS |  |  | 03 |  |  |  |  |  |
| PK03EMU33Z |  | 03E Recv. at Site - 2001-U Demineralizer Unit | milestone | 0d | 2007-03-31 | 2007-03-31 | PK000MU33O, CK000YA306 |  |  |  | 135d | 0d | EBWK 6 Day Egypt Holidays | 2006-07-29 | 0 | 0 | 03 | PK | MU3 | 03E | PK | MU330 | 2001U | FE | M | L | P | U | HOU |  |  |  |  |  |  |  |
| PK03CMJ36Z |  | 03C Recv. at Site - 2205-J/JA, 2206-J/JA Pumps | milestone | 0d | 2007-04-14 | 2007-04-14 | PK000MJ36O, CK000YA306 |  |  |  | 146d | 0d | EBWK 6 Day Egypt Holidays | 2006-07-29 | 0 | 0 | 03 | PK | MJ3 | 03C | PK | MJ305 |  | PE | M | L | P | GO | HOU |  |  |  |  |  |  |  |
| PK03DMJ36Z |  | 03D Recv. at Site - 2002-J/JA Demineralized Water Pumps | milestone | 0d | 2007-04-14 | 2007-04-14 | PK000MJ36O, CK000YA306 |  |  |  | 158d | 0d | EBWK 6 Day Egypt Holidays | 2006-07-29 | 0 | 0 | 03 | PK | MJ3 | 03D | PK | MJ305 | 2002J | PE | M | L | P | GO | HOU |  |  |  |  |  |  |  |
| PK03AML50Z |  | 03A Recv. at Site - 2003-L PAI/IA Compressor Pkg | milestone | 0d | 2007-04-28 | 2007-04-28 | PK000ML50O, CK000YA306, CK000YA306 FF |  |  |  | 95d | 0d | EBWK 6 Day Egypt Holidays | 2006-07-29 | 0 | 0 | 03 | PK | ML5 | 03A | PK | ML500 | 2003L | FE | M | L | P | D | HOU |  | 03 |  |  |  |  |  |
|  | 04 | **Corridor** |  |  |  |  |  |  |  |  |  |  |  |  |  |  |  |  |  |  |  |  |  |  |  |  |  |  |  |  |  |  |  |  |  |  |
|  | 05 | **Dock / Storage** |  |  | 2006-03-16 | 2007-05-19 |  |  |  |  |  |  |  |  |  |  |  |  |  |  |  |  |  |  |  |  |  |  |  |  |  |  |  |  |  |  |
| PK000MU11K |  | 05B MU311 - Fabricate/PO Promise HYDROCHLORIC ACID STORAGE |  | 80d | 2006-03-16 A | 2006-08-04 A | PK000MU11J, PK000MU11P FF | 100% | 2006-03-20 | 2006-07-07 |  |  | EBWK - Global | 2006-07-29 | 0 | 0 | 05 | PK | MU3 | 000 | MU | MU311 |  | NE | MU | H | P |  |  | CD | 03 | 50 | 60 | 70 | 30 |  |
| PK000MU11S |  | 05B MU311 - Marshaling HYDROCHLORIC ACID STORAGE |  | 40d | 2006-08-07 A | 2006-11-09 A | PK000MU11K | 100% | 2006-08-21 | 2006-10-13 |  |  | EBWK - Global | 2006-07-29 | 0 | 0 | 05 | PK | MU3 | 000 | PK | MU311 |  | NE | MU | H | P |  |  |  | 03 | 30 | 40 | 45 |  | Shipped 11Nov |
| PK05BML51Z |  | 05B Recv. at Site - 2102-L Loading Arm | milestone | 0d | 2006-11-01 A | 2006-11-01 A | PK000ML51O, CK000YA306 | 100% | 2006-12-11 | 2006-12-11 |  |  | EBWK 6 Day Egypt Holidays | 2006-07-29 | 0 | 0 | 05 | PK | ML5 | 05B | PK | ML512 | 2102L | FE | M | L | P | FM | ITA |  | 05A |  |  |  |  |  |
| PK000MU311 |  | 05B MU311 Transport/Customes BULK CHEM. STORAGE TANKS |  | 30d | 2006-11-13 A | 2006-12-09 A | PK000MU11S | 100% | 2006-11-13 | 2006-12-22 |  |  | EBWK - Global | 2006-07-29 | 0 | 0 | 05 | PK | MU3 | 000 | MU | MU311 |  | NE | MU | N | P |  |  |  | 03 | 25 | 30 | 40 |  |  |
| PK050I1105 |  | 050 Orfice Plates - Recv on Site Dock/Storage Area | milestone | 0d | 2006-12-07 A | 2006-12-07 A | CK000YA306, PK010I1103 | 100% | 2007-01-27 | 2007-01-27 |  |  | EBWK 6 Day Egypt Holidays | 2006-07-29 | 0 | 0 | 05 | PK | I21 | 050 | PK | I2110 |  | IR | I | L | P |  |  | N |  |  |  |  |  |  |
| PK02FMU11Z |  | 05B MU311 Recv. at Site - 2109-LA HYDROCHLORIC ACID STORAGE TANK A | milestone | 0d | 2006-12-09 A | 2006-12-09 A | PK000MU311 | 100% | 2007-01-26 | 2007-01-26 |  |  | EBWK - Global | 2006-07-29 | 0 | 0 | 01 | PK | MU3 | 01D | PK | MU311 |  | NE | M | L | P | DA | HOU |  | 03 |  |  |  |  |  |
| PK02GMU11Z |  | 05B MU311 Recv. at Site - 2109-LB HYDROCHLORIC ACID STORAGE TANK B | milestone | 0d | 2006-12-09 A | 2006-12-09 A | PK000MU311 | 100% | 2007-01-26 | 2007-01-26 |  |  | EBWK - Global | 2006-07-29 | 0 | 0 | 01 | PK | MU3 | 01D | PK | MU311 |  | NE | M | L | P | DA | HOU |  | 03 |  |  |  |  |  |
| PK02LMU11Z |  | 05B MU311 Recv. at Site - 2110-L SODIUM HYDROCHLORITE STORAGE | milestone | 0d | 2006-12-09 A | 2006-12-09 A | PK000MU311 | 100% | 2007-01-26 | 2007-01-26 |  |  | EBWK - Global | 2006-07-29 | 0 | 0 | 01 | PK | MU3 | 01D | PK | MU311 |  | NE | M | L | P | DA | HOU |  | 03 |  |  |  |  |  |
| PK03FMU11Z |  | 05B MU311 Recv. at Site - 2109-L HYDROCHLORIC ACID STORAGE | milestone | 0d | 2006-12-09 A | 2006-12-09 A | PK000MU311 | 100% | 2007-01-26 | 2007-01-26 |  |  | EBWK - Global | 2006-07-29 | 0 | 0 | 01 | PK | MU3 | 01D | PK | MU311 |  | NE | M | L | P | DA | HOU |  | 03 |  |  |  |  |  |
| PK05AML33Z |  | 05A Recv. at Site - 2101-L Ammonia Refrigeration Pkg | milestone | 0d | 2006-12-09 A | 2006-12-09 A | PK000ML33O, CK000YA306 | 100% | 2007-01-27 | 2007-01-27 |  |  | EBWK 6 Day Egypt Holidays | 2006-07-29 | 0 | 0 | 05 | PK | ML3 | 05A | PK | ML330 | 2101L | NE | M | L | P | TO | U/E |  |  |  |  |  |  |  |
| PK000MB71Z |  | 05A Recv. at Site - Storage Flare & Flame FRT Gen. | milestone | 0d | 2007-03-31 | 2007-03-31 | PK000MB71O, CK000YA306 |  |  |  | 264d | 78d | EBWK 6 Day Egypt Holidays | 2006-07-29 | 0 | 0 | 05 | PK | MB7 | 05A | PK | MB710 | 2202B | CE | M | L | P |  |  |  |  |  |  |  |  |  |
| PK000MJ38A |  | 05A Recv. at Site - 2100-JA Pumps - MJ308 | milestone | 0d | 2007-04-14 | 2007-04-14 | PK000MJ38W, CK000YA306 |  |  |  | 215d | 10d | EBWK 6 Day Egypt Holidays | 2006-07-29 | 0 | 0 | 05 | PK | MJ3 | 05A | PK | MJ308 | 2100JA | CE | M | L | P |  |  |  | 03 |  |  |  |  |  |
| PK05AMJ36Z |  | 05A Recv. at Site - 2203-J/JM, 2106-J, 2107-J Pumps | milestone | 0d | 2007-04-14 | 2007-04-14 | PK000MJ36O, CK000YA306 |  |  |  | 207d | 176d | EBWK 6 Day Egypt Holidays | 2006-07-29 | 0 | 0 | 05 | PK | MJ3 | 05A | PK | MJ305 |  | PE | M | L | P | GO | HOU |  |  |  |  |  |  |  |
| PK05AMJ37A |  | 05A Recv. at Site - 2100-JA Pumps - MJ307 | milestone | 0d | 2007-04-23 | 2007-04-23 | PK000MJ37W, CK000YA306 |  |  |  | 206d | 1d | EBWK 6 Day Egypt Holidays | 2006-07-29 | 0 | 0 | 05 | PK | MJ3 | 05A | PK | MJ307 | 2100JA | CE | M | L | P | SU | HOU |  | 03 |  |  |  |  |  |
| PK000MJ71Z |  | 05A Recv. at Site - 2108-J Emerg Power Generator | milestone | 0d | 2007-05-19 | 2007-05-19 | PK000MJ71O, CK000YA306 |  |  |  | 86d | 0d | EBWK 6 Day Egypt Holidays | 2006-07-29 | 0 | 0 | 05 | PK | MJ7 | 05A | PK | MJ731 |  | PE | M | L | P |  |  |  |  |  |  |  |  |  |

| ID | WBS | Activity | Duration | Start | Finish | Predecessors | Complete | Planned start | Planned finish | zData Date | Sequence | PCA Criticality Index | PCA Duration Sensitivity | User Defined Field 1 | User Definer Field 2 | EB02 - UNIT | EB01 - RESP | EB06 - WORK OP | EB03 - AREA | EB05 - DISCIPLINE | EB04 - CLASS | EB00 - EPC | EB15 - Civil / U/G Path of Construction | EB16 - Piping Path of Construction | EB17 - Suffix | EB10 - KEY | user_integer2 | EB11 - FLAG | EB08 - TAG | Optimistic Duration | Most Likely Duration | Pessimistic Duration | EB14 - RISK | EB22 - Critical Actvities |
| --- | --- | --- | --- | --- | --- | --- | --- | --- | --- | --- | --- | --- | --- | --- | --- | --- | --- | --- | --- | --- | --- | --- | --- | --- | --- | --- | --- | --- | --- | --- | --- | --- | --- | --- |
|  | E4B4 | **Ammonia Plant (MEC)** |  | 2005-04-25 | 2007-03-01 |  |  |  |  |  |  |  |  |  |  |  |  |  |  |  |  |  |  |  |  |  |  |  |  |  |  |  |  |  |
|  | E | **Engineering (MEC)** |  | 2005-04-25 | 2007-03-01 |  |  |  |  |  |  |  |  |  |  |  |  |  |  |  |  |  |  |  |  |  |  |  |  |  |  |  |  |  |
|  | 02 | **Ammonia Plant** |  | 2005-04-25 | 2007-03-01 |  |  |  |  |  |  |  |  |  |  |  |  |  |  |  |  |  |  |  |  |  |  |  |  |  |  |  |  |  |
|  | AR | **Architecture Engineering** |  |  |  |  |  |  |  |  |  |  |  |  |  |  |  |  |  |  |  |  |  |  |  |  |  |  |  |  |  |  |  |  |
|  | PE | **Project Engineering** |  |  |  |  |  |  |  |  |  |  |  |  |  |  |  |  |  |  |  |  |  |  |  |  |  |  |  |  |  |  |  |  |
|  | PS | **Planning & Scheduling** |  |  |  |  |  |  |  |  |  |  |  |  |  |  |  |  |  |  |  |  |  |  |  |  |  |  |  |  |  |  |  |  |
|  | QM | **Quality Mgmt.** |  |  |  |  |  |  |  |  |  |  |  |  |  |  |  |  |  |  |  |  |  |  |  |  |  |  |  |  |  |  |  |  |
|  | CE | **Chief Engineering** |  |  |  |  |  |  |  |  |  |  |  |  |  |  |  |  |  |  |  |  |  |  |  |  |  |  |  |  |  |  |  |  |
|  | CV | **Civil Engineering** |  | 2005-05-23 | 2007-02-09 |  |  |  |  |  |  |  |  |  |  |  |  |  |  |  |  |  |  |  |  |  |  |  |  |  |  |  |  |  |
| EM02NCV160 |  | 02N Design & Model Major Eq. Fdns | 20d | 2005-05-23 A | 2005-10-21 A | EM02NPI120 SS | 100% | 2005-07-13 | 2005-08-09 | 2006-07-29 | 160 | 0 | 0 | 02N | CV160 | 02 | EM | C30 | 02N | CV | C | E | 39 | 37 | E4B4 |  |  |  |  |  |  |  |  |  |
| EM02ECV120 |  | 02E Design & Model Major Structural Steel | 30d | 2005-06-27 A | 2005-12-02 A | EM02EPI120 SS | 100% | 2005-06-27 | 2005-08-09 | 2006-07-29 | 120 | 0 | 0 | 02E | CV120 | 02 | EM | S20 | 02E | CV | S | E | 32 | 15 | E4B4 |  |  |  |  |  |  |  |  |  |
| EM02ECV125 |  | 02E Design & Model Structural Fdns | 30d | 2005-06-27 A | 2005-12-02 A | EM02EPI120 SS+5d | 100% | 2005-06-27 | 2005-08-09 | 2006-07-29 | 125 | 0 | 0 | 02E | CV125 | 02 | EM | C50 | 02E | CV | C | E | 32 | 15 | E4B4 |  |  |  |  |  |  |  |  |  |
| EM02YCV130 |  | 02Y Design & Model Structural Fdns | 30d | 2005-06-27 A | 2005-10-17 A | EM02YPI121 SS+5d | 100% | 2005-06-27 | 2005-08-09 | 2006-07-29 | 125 | 0 | 0 | 02Y | CV125 | 02 | EM | C40 | 02Y | CV | C | E | 8 | 9 | E4B4 |  |  |  |  |  |  |  |  |  |
| EM02BCV160 |  | 02B Design & Model Major Eq. Fdns | 20d | 2005-07-04 A | 2005-11-28 A | EM02BPI120 SS | 100% | 2005-07-28 | 2005-08-24 | 2006-07-29 | 160 | 0 | 0 | 02B | CV160 | 02 | EM | C30 | 02B | CV | C | E | 34 | 34 | E4B4 |  |  |  |  |  |  |  |  |  |
| EM02DCV120 |  | 02D Design & Model Major Structural Steel | 20d | 2005-07-06 A | 2006-01-12 A | EM02DPI120 SS | 100% | 2005-07-06 | 2005-08-02 | 2006-07-29 | 120 | 0 | 0 | 02D | CV120 | 02 | EM | S20 | 02D | CV | S | E | 33 | 26 | E4B4 | C2 |  |  |  |  |  |  |  |  |
| EM02DCV125 |  | 02D Design & Model Structural Fdns | 20d | 2005-07-06 A | 2006-01-12 A | EM02DPI120 SS+5d | 100% | 2005-07-06 | 2005-08-02 | 2006-07-29 | 125 | 0 | 0 | 02D | CV125 | 02 | EM | C50 | 02D | CV | C | E | 33 | 26 | E4B4 | C3 |  |  |  |  |  |  |  |  |
| EM02JCV120 |  | 02J Design & Model Major Structural Steel | 30d | 2005-07-07 A | 2005-11-11 A | EM02JPI120 SS | 100% | 2005-07-07 | 2005-08-17 | 2006-07-29 | 120 | 0 | 0 | 02J | CV120 | 02 | EM | S20 | 02J | CV | S | E | 18 | 30 | E4B4 |  |  |  |  |  |  |  |  |  |
| EM02JCV125 |  | 02J Design & Model Structure Fdns | 30d | 2005-07-07 A | 2005-11-11 A | EM02JPI120 SS | 100% | 2005-07-07 | 2005-08-17 | 2006-07-29 | 125 | 0 | 0 | 02J | CV125 | 02 | EM | C50 | 02J | CV | C | E | 18 | 30 | E4B4 |  |  |  |  |  |  |  |  |  |
| EM02ACV120 |  | 02A Design & Model Major Structural Steel | 20d | 2005-07-20 A | 2005-10-28 A | EM02API120 SS | 100% | 2005-07-20 | 2005-08-16 | 2006-07-29 | 120 | 0 | 0 | 02A | CV120 | 02 | EM | S20 | 02A | CV | S | E | 36 | 25 | E4B4 |  |  |  |  |  |  |  |  |  |
| EM02ACV125 |  | 02A Design & Model Structural Fdns | 20d | 2005-07-20 A | 2005-10-28 A | EM02API120 SS+5d | 100% | 2005-07-20 | 2005-08-16 | 2006-07-29 | 125 | 0 | 0 | 02A | CV125 | 02 | EM | C50 | 02A | CV | C | E | 36 | 25 | E4B4 |  |  |  |  |  |  |  |  |  |
| EM02HCV120 |  | 02H Design & Model Major Structural Steel | 30d | 2005-07-22 A | 2005-11-11 A | EM02HPI120 SS | 100% | 2005-07-22 | 2005-09-01 | 2006-07-29 | 120 | 0 | 0 | 02H | CV120 | 02 | EM | S20 | 02H | CV | S | E | 11 | 20 | E4B4 |  |  |  |  |  |  |  |  |  |
| EM02HCV125 |  | 02H Design & Model Structural Fdns | 30d | 2005-07-22 A | 2005-12-14 A | EM02HPI120 SS+5d | 100% | 2005-07-22 | 2005-09-01 | 2006-07-29 | 125 | 0 | 0 | 02H | CV125 | 02 | EM | C50 | 02H | CV | C | E | 11 | 20 | E4B4 | C3 |  |  |  |  |  |  |  |  |
| EM02HCV160 |  | 02H Design & Model Major Eq. Fdns (Excludes fan fdns.) | 45d | 2005-08-01 A | 2006-03-31 A | EM02HPI120 SS, PM000MD45N FF, PK000MD31N FF, PK000MD51N FF, EK000MB070 | 100% | 2005-08-01 | 2005-09-30 | 2006-07-29 | 160 | 0 | 0 | 02H | CV160 | 02 | EM | C30 | 02H | CV | C | E | 11 | 20 | E4B4 | C3 |  |  |  |  |  |  |  |  |
| EM02YCV120 |  | 02Y Design & Model Major Structural Steel | 58d | 2005-08-29 A | 2005-12-14 A | EK020PI010, EK020PI012 SS+25d | 100% | 2005-08-29 | 2005-11-16 | 2006-07-29 | 120 | 0 | 0 | 02Y | CV120 | 02 | EM | S10 | 02Y | CV | S | E | 8 | 9 | E4B4 | C2 |  |  |  |  |  |  |  |  |
| EM02LCV120 |  | 02L Design & Model Major Structural Steel | 66d | 2005-09-02 A | 2005-11-04 A | EM02LPI120 SS+17d | 100% | 2005-09-19 | 2005-12-19 | 2006-07-29 | 120 | 0 | 0 |  |  | 02 | EM | S20 | 02L | CV | S | E | 23 | 19 | E4B4 |  |  |  |  |  |  |  |  |  |
| EM02GCV120 |  | 02G Design & Model Major Structural Steel | 40d | 2005-09-05 A | 2006-03-15 A | EM02GPI120 SS | 100% | 2005-09-20 | 2005-11-14 | 2006-07-29 | 120 | 0 | 0 | 02A | CV120 | 02 | EM | S20 | 02G | CV | S | E | 9 | 22 | E4B4 | C2 |  |  |  |  |  |  |  |  |
| EM02GCV160 |  | 02G Design & Model Major Eq. Fdns | 40d | 2005-09-05 A | 2006-03-31 A | EM02GPI120 SS | 100% | 2005-09-19 | 2005-11-11 | 2006-07-29 | 160 | 0 | 0 | 02G | CV160 | 02 | EM | C30 | 02G | CV | C | E | 9 | 22 | E4B4 | C3 |  |  |  |  |  |  |  |  |
| EM02CCV160 |  | 02C Design & Model Major Eq. Fdns | 40d | 2005-09-06 A | 2005-10-31 A | EM02CPI120 SS | 100% | 2005-09-13 | 2005-11-07 | 2006-07-29 | 160 | 0 | 0 | 02C | CV160 | 02 | EM | C30 | 02C | CV | C | E | 14 | 21 | E4B4 |  |  |  |  |  |  |  |  |  |
| EM02LCV125 |  | 02L Design & Model Structural Fdns | 63d | 2005-09-07 A | 2005-12-14 A | EM02LPI120 SS+20d | 100% | 2005-09-22 | 2005-12-19 | 2006-07-29 | 125 | 0 | 0 |  |  | 02 | EM | C50 | 02L | CV | C | E | 23 | 19 | E4B4 | C3 |  |  |  |  |  |  |  |  |
| EM02CCV125 |  | 02C Design & Model Structural Fdns | 46d | 2005-09-12 A | 2005-11-28 A | EM02CPI120 SS+20d | 100% | 2005-09-27 | 2005-11-29 | 2006-07-29 | 125 | 0 | 0 | 02A | CV125 | 02 | EM | C50 | 02C | CV | C | E | 14 | 21 | E4B4 |  |  |  |  |  |  |  |  |  |
| EM02ACV160 |  | 02A Design & Model Major Eq. Fdns | 20d | 2005-09-12 A | 2006-01-06 A | EM02API120 SS, PM000MD22N FF+10d | 100% | 2005-09-12 | 2005-10-07 | 2006-07-29 | 160 | 0 | 0 | 02A | CV160 | 02 | EM | C30 | 02A | CV | C | E | 36 | 25 | E4B4 | C3 |  |  |  |  |  |  |  |  |
| EM02GCV125 |  | 02G Design & Model Structural Fdns | 41d | 2005-09-16 A | 2006-03-15 A | EM02GPI120 SS+9d | 100% | 2005-09-30 | 2005-11-25 | 2006-07-29 | 125 | 0 | 0 | 02D | CV125 | 02 | EM | C50 | 02G | CV | C | E | 9 | 22 | E4B4 | C3 |  |  |  |  |  |  |  |  |
| EM02CCV120 |  | 02C Design & Model Major Structural Steel | 50d | 2005-09-19 A | 2005-11-28 A | EM02CPI120 SS+25d | 100% | 2005-10-04 | 2005-12-12 | 2006-07-29 | 120 | 0 | 0 | 02A | CV120 | 02 | EM | S20 | 02C | CV | S | E | 14 | 21 | E4B4 |  |  |  |  |  |  |  |  |  |
| EM02ECV160 |  | 02E Design & Model Major Eq. Fdns | 30d | 2005-09-23 A | 2005-12-21 A | EM02EPI120 SS, PM000MD45N FF+10d, PK000MD34N FF+10d, PM000MD42N FF+10d | 100% | 2005-09-15 | 2005-10-26 | 2006-07-29 | 160 | 0 | 0 | 02E | CV160 | 02 | EM | C30 | 02E | CV | C | E | 32 | 15 | E4B4 | C3 |  |  |  |  |  |  |  |  |
| EM02JCV160 |  | 02J Design & Model Major Eq. Fdns | 30d | 2005-09-23 A | 2005-12-16 A | EM02JPI120 SS, PK000MD32N FF+10d, PK000MD34N FF+10d | 100% | 2005-08-29 | 2005-10-07 | 2006-07-29 | 160 | 0 | 0 | 02J | CV160 | 02 | EM | C30 | 02J | CV | C | E | 18 | 30 | E4B4 | C3 |  |  |  |  |  |  |  |  |
| EM02KCV160 |  | 02K Design & Model Major Eq. Fdns | 30d | 2005-09-23 A | 2005-12-21 A | EM02KPI120 SS, PM000MD22N FF+10d, PM000MD45N FF+10d | 100% | 2005-09-23 | 2005-11-03 | 2006-07-29 | 160 | 0 | 0 | 02K | CV160 | 02 | EM | C30 | 02K | CV | C | E | 19 | 17 | E4B4 | C3 |  |  |  |  |  |  |  |  |
| EM02MCV120 |  | 02M Design & Model Major Structural Steel | 34d | 2005-10-04 A | 2005-11-18 A | EM02MPI120 SS+45d | 100% |  |  | 2006-07-29 | 120 | 0 | 0 | 02M | CV120 | 02 | EM | S20 | 02M | CV | S | E | 24 | 28 | E4B4 |  |  |  |  |  |  |  |  |  |
| EM02MCV125 |  | 02M Design & Model Structural Fdns | 31d | 2005-10-06 A | 2005-11-18 A | EM02MPI120 SS+48d | 100% | 2005-10-07 | 2005-11-18 | 2006-07-29 | 125 | 0 | 0 | 02M | CV125 | 02 | EM | C50 | 02M | CV | C | E | 24 | 28 | E4B4 |  |  |  |  |  |  |  |  |  |
| EM02DCV160 |  | 02D Design & Model Major Eq. Fdns | 20d | 2005-10-10 A | 2005-11-30 A | EM02DPI120 SS, PK000MD43N FF+10d, PM000MD44N FF+10d | 100% | 2005-10-10 | 2005-11-04 | 2006-07-29 | 160 | 0 | 0 | 02D | CV160 | 02 | EM | C30 | 02D | CV | C | E | 33 | 26 | E4B4 |  |  |  |  |  |  |  |  |  |
| EM02MCV160 |  | 02M Design & Model Major Eq. Fdns | 20d | 2005-10-17 A | 2005-11-18 A | EM02MPI120 SS, PK000MD33N FF+10d, PM000MD42N FF+10d | 100% | 2005-10-17 | 2005-11-11 | 2006-07-29 | 160 | 0 | 0 | 02M | CV160 | 02 | EM | C30 | 02M | CV | C | E | 24 | 28 | E4B4 |  |  |  |  |  |  |  |  |  |
| EM02LCV160 |  | 02L Design & Model Major Eq. Fdns | 30d | 2005-10-31 A | 2005-12-14 A | EM02LPI120 SS, PM000MD42N FF+10d, PM000MD44N FF+10d, PM000MD47N FF+10d | 100% | 2005-10-31 | 2005-12-09 | 2006-07-29 | 160 | 0 | 0 |  |  | 02 | EM | C30 | 02L | CV | C | E | 23 | 19 | E4B4 | C3 |  |  |  |  |  |  |  |  |
| EM02FCV160 |  | 02F Design & Model Major Eq. Fdns | 20d | 2005-12-14 A | 2006-07-07 A | EM02FPI120 SS, PK02FMUV02 FF+10d, PK02FMJV02 FF+10d | 100% | 2006-02-27 | 2006-03-24 | 2006-07-29 | 160 | 0 | 0 | 02F | CV160 | 02 | EM | C30 | 02F | CV | C | E | 29 | 16 | E4B4 | C3 |  |  |  |  |  |  |  |  |
| EM02ACV122 |  | 02A Update Model Struct Steel & Issue Dwgs - IFC | 25d | 2006-01-30 A | 2006-07-26 A | EM02ACV120 FF+15d, EM02API132 FF+15d, EM02API136 FF+10d, EM02API200 FF+15d, EM02UPICBF FF+15d, EM02UPIFWF FF+15d, EM02UPIOWF FF+15d, EM02UPI190 FF+15d, EK020PI013 FF+15d | 100% | 2006-01-30 | 2006-03-03 | 2006-07-29 | 122 | 0 | 0 | 02A | CV122 | 02 | EM | S20 | 02A | CV | S | E | 36 | 25 | E4B4 | C4 | 15 | PS |  |  |  |  |  |  |
| EM02BCV164 |  | 02B Update Model Major Eq. Fdns & Issue Dwgs-IFC | 10d | 2006-01-31 A | 2006-04-10 A | EM02BCV160, EM02BPI132, EK000CV045 SS, EM02BPI200 FF+10d, EM02UPICBF FF+5d, EM02UPIFWF FF+5d, EM02UPIOWF FF+5d, PK000ML31N FF+5d, EM02UPICBF F1, EM02UPIOWF F1, EM02UPIFWF F1, EM02UPI190 FF, EK020PI013 FF, PK02BMLV02 FF+5d | 100% | 2006-01-31 | 2006-02-13 | 2006-07-29 | 164 | 0 | 0 | 02B | CV164 | 02 | EM | C30 | 02B | CV | C | E | 34 | 34 | E4B4 | C5 | 10 |  |  |  |  |  |  |  |
| EM02NCV164 |  | 02N Update Model Major Eq. Fdns & Issue Dwgs-IFC | 10d | 2006-01-31 A | 2006-07-24 A | EM02NCV160, EM02NPI132 FF+15d, EK000CV045 SS+10d, EM02NPI200 FF+10d, EM02UPICBF FF+10d, EM02UPIFWF FF+10d, EM02UPIOWF FF+10d, EM02UPICBF F1+10d, EM02UPIOWF F1+10d, EM02UPIFWF F1+10d, EM02UPI190 FF+10d, EK020PI013 FF+10d, ZZ2010 FF+10d | 100% | 2006-01-31 | 2006-02-13 | 2006-07-29 | 164 | 0 | 0 | 02N | CV164 | 02 | EM | C30 | 02N | CV | C | E | 39 | 37 | E4B4 | C5 | 10 | PS |  |  |  |  |  |  |
| EM02ECV122 |  | 02E Update Model Struct Steel & Issue Dwgs - IFC | 15d | 2006-02-01 A | 2006-06-30 A | EM02ECV120, EM02EPI132 FF+20d, EM02EPI200 FF+15d, EM02UPICBF FF+15d, EM02UPIFWF FF+15d, EM02UPIOWF FF+15d, EM02UPICBF F1+15d, EM02UPIOWF F1+15d, EM02UPIFWF F1+15d, EM02UPI190 FF+15d, EK020PI013 FF+15d | 100% | 2006-02-01 | 2006-02-21 | 2006-07-29 | 122 | 0 | 0 | 02E | CV122 | 02 | EM | S20 | 02E | CV | S | E | 32 | 15 | E4B4 | C4 | 15 | PS |  |  |  |  |  |  |
| EM02ECV164 |  | 02E Update Model Major Eq. Fdns & Issue Dwgs-IFC | 15d | 2006-02-01 A | 2006-06-14 A | EM02ECV160, EM02EPI132 FF+20d, EK000CV045 SS, EM02UPICBF FF+5d, EM02UPIFWF FF+5d, EM02UPIOWF FF+5d, EM02EPI200 FF+10d, PK02EMD01 FF+10d, PK02EMD08 FF+10d, EM02UPICBF F1+10d, EM02UPIOWF F1+10d, EM02UPIFWF F1+10d, EM02UPI190 FF+10d, EK020PI013 FF+10d, PK02LMC21 FF, ZZ1520 FF | 100% | 2006-02-01 | 2006-02-21 | 2006-07-29 | 164 | 0 | 0 | 02E | CV164 | 02 | EM | C30 | 02E | CV | C | E | 32 | 15 | E4B4 | C5 | 15 | PS |  |  |  |  |  |  |
| EM02ACV164 |  | 02A Update Model Major Eq. Fdns & Issue Dwgs-IFC | 30d | 2006-03-01 A | 2006-09-05 A | EM02ACV160 FF+10d, EM02API132, EK000CV045, EK020PI013 FF+10d, EM02API200 FF+10d, EM02UPICBF FF+10d, EM02UPIFWF FF+10d, EM02UPIOWF FF+10d, PK02AMD01 FF+10d, PK02AMD02 FF+10d, PK02AMD03 FF+10d, PK02AMC15 FF+10d, PK02AMC18 FF+10d, PK02AMD04 FF+10d, PK02AMD05 FF+10d, PK02AMD06 FF+10d, PK02AMJV02 FF+10d, PK01AMLV02 FF | 100% | 2006-06-12 | 2006-07-24 | 2006-07-29 | 164 | 0 | 0 | 02A | CV164 | 02 | EM | C30 | 02A | CV | C | E | 36 | 25 | E4B4 | C5 | 15 | PS |  |  |  |  |  |  |
| EM02ACV128 |  | 02A Update Model Structural Fdns & Issue Dwgs - IFC | 15d | 2006-03-13 A | 2006-04-12 A | EM02ACV125, EM02API132, EK000CV045 SS, EM02UPICWB FF, EM02UPIFWF FF+5d, EM02UPIOWF FF+5d, EK020PI013 FF+7d, EM02API200 FF+10d | 100% | 2006-03-23 | 2006-04-12 | 2006-07-29 | 128 | 0 | 0 | 02A | CV128 | 02 | EM | C50 | 02A | CV | C | E | 36 | 25 | E4B4 | C5 | 15 |  |  |  |  |  |  |  |
| EK02KCV000 |  | 02K 114-F Benfield Solution Storage Tank - Fdn. Dwgs-IFC | 30d | 2006-03-20 A | 2006-04-21 A | EK000CV045 SS, EM02KPI200 FF+10d, EM02KPI051, PK02KMF04 SS | 100% | 2006-04-14 | 2006-05-26 | 2006-07-29 | 164 | 0 | 0 | 02K | CV164 | 02 | EM | C30 | 02K | CV | C | E | 19 | 17 | E4B4 | C5 | 10 |  | 114F |  |  |  |  |  |
| EM02JCV128 |  | 02J Update Model Structure Fdns & Issue Dwgs - IFC | 15d | 2006-04-06 A | 2006-04-06 A | EM02JCV125, EM02JPI132, EK000CV045 FF, EM02JPI200 FF+10d, EM02UPICBF FF+10d, EM02UPIFWF FF+10d, EM02UPIOWF FF+10d, EM02UPICBF F1+10d, EM02UPIOWF F1+10d, EM02UPIFWF F1+10d, EM02UPI190 FF+10d, EK020PI013 FF+10d | 100% | 2006-07-10 | 2006-07-28 | 2006-07-29 | 128 | 0 | 0 | 02J | CV128 | 02 | EM | C50 | 02J | CV | C | E | 18 | 30 | E4B4 | C5 | 15 |  |  |  |  |  |  |  |
| EM02JCV164 |  | 02J Update Model Major Eq. Fdns & Issue Dwgs-IFC | 15d | 2006-04-06 A | 2006-04-06 A | EM02JCV160 FF+15d, EM02JPI132, EK000CV045, EM02JPI200 FF+10d, EM02UPICBF FF+10d, EM02UPIFWF FF+10d, EM02UPIOWF FF+10d, ZZ1580, ZZ1860 | 100% | 2006-05-25 | 2006-06-14 | 2006-07-29 | 164 | 0 | 0 | 02J | CV164 | 02 | EM | C30 | 02J | CV | C | E | 18 | 30 | E4B4 | C5 | 15 |  |  |  |  |  |  |  |
| EM02YCV122 |  | 02Y Update Model Struct Steel & Issue Dwgs - IFC | 46d | 2006-04-10 A | 2006-07-27 A | EM02YCV120 FF+15d, EM02YPI132, EM02UPICBF FF+15d, EM02UPIFWF FF+15d, EM02UPIOWF FF+15d, EM02YPI136 FF+15d, EK020PI012 FF | 100% | 2006-04-10 | 2006-06-12 | 2006-07-29 | 122 | 24.7 | 2.7 | 02Y | CV122 | 02 | EM | S10 | 02Y | CV | S | E | 8 | 9 | E4B4 | C4 | 15 | PS |  | 40 | 46 | 50 | 17 | C3 |
| EM02LCV164 |  | 02L Update Model Major Eq. Fdns & Issue Dwgs-IFC | 15d | 2006-04-20 A | 2006-07-27 A | EM02LCV160, EM02LPI132, EK000CV045, EM02LPI200 FF+10d, EM02UPICBF FF+10d, EM02UPIFWF FF+10d, EM02UPIOWF FF+10d, PK000MJ32N FF+10d, PK000MJ37T FF+10d, PK000ML42N FF+10d, PK02LMD03 FF+10d, PK02LMD04 FF+10d, PK02LMD05 FF+10d, PK02LMD29 FF+10d, EM02UPICBF F1+10d, EM02UPIOWF F1+10d, EM02UPIFWF F1+10d, EM02UPI190 FF+10d, EK020PI013 FF+10d, PK02LMJV01 FF, PK02LMJV05 FF+10d, ZZ1670 FF+10d, PK02LMLV02 FF+10d, PK02LMLV05 FF+10d, PK02LMLV08 FF+10d, ZZ1680 SS, ZZ1770 SS, PK02LMC22 FF+10d | 100% | 2006-05-22 | 2006-06-09 | 2006-07-29 | 164 | 0 | 0 |  |  | 02 | EM | C30 | 02L | CV | C | E | 23 | 19 | E4B4 | C5 | 15 | PS |  |  |  |  | 17 |  |
| EM02MCV164 |  | 02M Update Model Major Eq. Fdns & Issue Dwgs-IFC | 15d | 2006-04-20 A | 2006-06-23 A | EM02MCV160, EM02MPI132, EK000CV045, EM02MPI200 FF+10d, EM02UPICBF FF+10d, EM02UPIFWF FF+10d, EM02UPIOWF FF+10d, PK02MMD11 FF+10d, EM02UPICBF F1+10d, EM02UPIOWF F1+10d, EM02UPIFWF F1+10d, EM02UPI190 FF+10d, EK020PI013 FF+10d, PK02MMB03 FF+10d, ZZ1950 FF+10d, ZZ1710 SS, ZZ1920 | 100% | 2006-07-24 | 2006-08-11 | 2006-07-29 | 164 | 0 | 0 | 02M | CV164 | 02 | EM | C30 | 02M | CV | C | E | 24 | 28 | E4B4 | C5 | 15 | PS |  |  |  |  |  |  |
| EM02YCV133 |  | 02Y Update Model Structural Fdns & Issue Dwgs - IFC | 37d | 2006-04-24 A | 2006-07-21 A | EM02YCV130, EM02YPI132 FS+14d, EM02YCV122 FF, EK000CV045 FF, EM02UPICBF FF+10d, EM02UPIFWF FF+10d, EM02UPIOWF FF+10d, EK020PI012 FF+10d, EM02UPI190 FF+10d, EK020PI013 FF+10d | 100% | 2006-04-24 | 2006-06-13 | 2006-07-29 | 128 | 0 | 0 | 02Y | CV128 | 02 | EM | C40 | 02Y | CV | C | E | 8 | 9 | E4B4 | C5 | 15 | PS |  |  |  |  | 17 |  |
| EM02HCV164 |  | 02H Update Model Major Eq. Fdns & Issue Dwgs-IFC | 20d | 2006-05-01 A | 2006-11-23 A | EM02HCV160, EM02HPI132, EK000CV045, EM02HPI200 FF+10d, EM02UPICBF FF+10d, EM02UPIFWF FF+10d, EM02UPIOWF FF+10d, EM02UPICBF F1+10d, EM02UPIOWF F1+10d, EM02UPIFWF F1+10d, EM02UPI190 FF+10d, EK020PI013 FF+10d, PK02HMB20 FF+10d, PK02HMB36 FF+10d, PK02HMB42 FF+10d, PK02HMB51 FF+10d, PK02HMB33 FF, PK02HMB39 FF, ZZ1800 FF | 100% | 2006-06-22 | 2006-07-19 | 2006-07-29 | 164 | 0 | 0 | 02H | CV164 | 02 | EM | C30 | 02H | CV | C | E | 11 | 20 | E4B4 | C5 | 15 | PS |  |  |  |  |  |  |
| EM02CCV128 |  | 02C Update Model Structural Fdns & Issue Dwgs - IFC | 20d | 2006-05-12 A | 2006-09-15 A | EM02CCV125, EM02CPI132, EK000CV045, EM02CPI200 FF+10d, EM02UPICBF FF+10d, EM02UPIFWF FF+10d, EM02UPIOWF FF+10d, PK000MJ75N FF+10d, PK000MJ37T FF+10d, PK000MJ38T FF+10d, EM02UPICBF F1+10d, EM02UPIOWF F1+10d, EM02UPIFWF F1+10d, EM02UPI190 FF+10d, EK020PI013 FF+10d | 100% | 2006-06-26 | 2006-07-21 | 2006-07-29 | 128 | 0 | 0 | 02A | CV128 | 02 | EM | C50 | 02C | CV | C | E | 14 | 21 | E4B4 | C5 | 15 | PS |  |  |  |  |  |  |
| EM02ECV128 |  | 02E Update Model Structural Fdns & Issue Dwgs - IFC | 15d | 2006-05-15 A | 2006-06-13 A | EM02ECV125, EM02EPI132, EM02ECV122 SS+5d, EK000CV045, EM02EPI200 FF+10d, EM02UPICBF FF+10d, EM02UPIFWF FF+10d, EM02UPIOWF FF+10d, EM02UPICBF F1+10d, EM02UPIOWF F1+10d, EM02UPIFWF F1+10d, EM02UPI190 FF+10d, EK020PI013 FF+10d | 100% | 2006-07-10 | 2006-07-28 | 2006-07-29 | 128 | 0 | 0 | 02E | CV128 | 02 | EM | C50 | 02E | CV | C | E | 32 | 15 | E4B4 | C5 | 15 | PS |  |  |  |  |  |  |
| EM02DCV126 |  | 02D Conceptual Misc. Steel Design/ Model | 20d | 2006-05-15 A | 2006-06-09 A | EM02DCV120 FF+10d, EM02DPI132 | 100% |  |  | 2006-07-29 | 126 | 0 | 0 | 02D | CV126 | 02 | EM | S30 | 02D | CV | S | E | 33 | 26 | E4B4 | C2 |  |  |  |  |  |  |  |  |
| EM02DCV164 |  | 02D Update Model Major Eq. Fdns & Issue Dwgs-IFC | 15d | 2006-05-15 A | 2006-06-02 A | EM02DCV160, EM02DPI132, EK000CV045, EM02DPI200 FF+10d, EM02UPICBF FF+10d, EM02UPIFWF FF+10d, EM02UPIOWF FF+10d, PK000MJ37T FF+10d, PK000MJ38T SS+10d, PK02DMD01 FF+10d, PK02DMD02 FF+10d, PK02DMD03 FF+10d, EM02UPICBF F1+10d, EM02UPIOWF F1+10d, EM02UPIFWF F1+10d, EM02UPI190 FF+10d, EK020PI013 FF+10d, PK02DMJV01 FF+10d, ZZ1490 FF+10d | 100% |  |  | 2006-07-29 | 164 | 0 | 0 | 02D | CV164 | 02 | EM | C30 | 02D | CV | C | E | 33 | 26 | E4B4 | C5 | 15 | PS |  |  |  |  |  |  |
| EM02DCV166 |  | 02D Conceptual Misc. Foundations Design/ Model | 15d | 2006-05-16 A | 2006-06-09 A | EM02DCV160 FF+10d, EM02DPI132 | 100% | 2006-05-19 | 2006-06-08 | 2006-07-29 | 166 | 0 | 0 | 02D | CV166 | 02 | EM | C60 | 02D | CV | C | E | 33 | 26 | E4B4 | C3 |  |  |  |  |  |  |  |  |
| EM02DCV128 |  | 02D Update Model Structural Fdns & Issue Dwgs - IFC | 15d | 2006-05-17 A | 2006-06-07 A | EM02DCV125, EM02DPI132, EK000CV045, EM02DPI200 FF+10d, EM02UPICBF FF+10d, EM02UPIFWF FF+10d, EM02UPIOWF FF+10d, PK000MJ37T FF+10d, EM02UPICBF F1+10d, EM02UPIOWF F1+10d, EM02UPIFWF F1+10d, EM02UPI190 FF+10d, EK020PI013 FF+10d | 100% | 2006-07-10 | 2006-07-28 | 2006-07-29 | 128 | 0 | 0 | 02D | CV128 | 02 | EM | C50 | 02D | CV | C | E | 33 | 26 | E4B4 | C5 | 15 |  |  |  |  |  |  |  |
| EM02JCV126 |  | 02J Misc. Steel Design/ Model | 20d | 2006-05-22 A | 2006-06-14 A | EM02JCV120 FF+10d, EM02JPI132 | 100% | 2006-05-22 | 2006-06-16 | 2006-07-29 | 126 | 0 | 0 | 02J | CV126 | 02 | EM | S30 | 02J | CV | S | E | 18 | 30 | E4B4 | C2 |  |  |  |  |  |  |  |  |
| EM02HCV128 |  | 02H Update Model Structural Fdns & Issue Dwgs - IFC | 20d | 2006-06-05 A | 2006-06-30 A | EM02HCV125, EM02HPI132, EK000CV045, EM02HPI200 FF+10d, EM02UPICBF FF+10d, EM02UPIFWF FF+10d, EM02UPIOWF FF+10d, EM02UPICBF F1+10d, EM02UPIOWF F1+10d, EM02UPIFWF F1+10d, EM02UPI190 FF+10d, EK020PI013 FF+10d | 100% | 2006-09-04 | 2006-09-29 | 2006-07-29 | 128 | 0 | 0 | 02H | CV128 | 02 | EM | C50 | 02H | CV | C | E | 11 | 20 | E4B4 | C5 | 15 | PS |  |  |  |  |  |  |
| EM02JCV122 |  | 02J Update Model Struct Steel & Issue Dwgs - IFC | 15d | 2006-06-05 A | 2006-06-30 A | EM02JCV120 FF+15d, EM02JPI132, EM02UPICBF FF+15d, EM02UPIFWF FF+15d, EM02UPIOWF FF+15d, EM02JPI200 FF+15d, EM02UPI190 FF+15d, EK020PI013 FF+15d | 100% | 2006-07-07 | 2006-07-27 | 2006-07-29 | 122 | 0 | 0 | 02J | CV122 | 02 | EM | S20 | 02J | CV | S | E | 18 | 30 | E4B4 | C4 | 15 | PS |  |  |  |  |  |  |
| EM02CCV164 |  | 02C Update Model Major Eq. Fdns & Issue Dwgs-IFC | 15d | 2006-06-05 A | 2006-07-28 A | EM02CCV160, EM02CPI132, EK000CV045, EM02UPICBF FF+10d, EM02UPIFWF FF+10d, EM02UPIOWF FF+10d, EM02CPI200 FF+10d, PK000MJ75N FF+10d, PK000MJ37T FF+10d, PK02CMJV01 FF+10d, PK02CMJV02 FF+10d, EK000CV071, EM02UPICBF F1+10d, EM02UPIOWF F1+10d, EM02UPIFWF F1+10d, EM02UPI190 FF+10d, EK020PI013 FF+10d, PK02CMJV03 FF+10d, PK02CMJV06 FF+10d, ZZ1430 FF | 100% | 2006-06-05 | 2006-06-23 | 2006-07-29 | 164 | 0 | 0 | 02C | CV164 | 02 | EM | C30 | 02C | CV | C | E | 14 | 21 | E4B4 | C5 | 15 | PS |  |  |  |  |  |  |
| EM02LCV122 |  | 02L Update Model Struct Steel & Issue Dwgs - IFC | 45d | 2006-06-05 A | 2006-08-25 A | EM02LCV120 FF+15d, EM02LPI132, EM02UPICBF FF+15d, EM02UPIFWF FF+15d, EM02UPIOWF FF+15d, EM02LPI200 FF+15d, EM02LPI136 FF+5d, PK000MJ32N FF+15d, PK000MJ37T FF+15d, PK000MJ38T FF+15d, PK000ML42N FF+15d, EM02UPICBF F1+15d, EM02UPIOWF F1+15d, EM02UPIFWF F1+15d, EM02UPI190 FF+15d, EK020PI013 FF+15d | 100% | 2006-06-05 | 2006-08-04 | 2006-07-29 | 122 | 2.9 | 0 |  |  | 02 | EM | S20 | 02L | CV | S | E | 23 | 19 | E4B4 | C4 | 15 | PS |  |  |  |  | 17 |  |
| EM02KCV164 |  | 02K Update Model Major Eq. Fdns & Issue Dwgs-IFC | 20d | 2006-06-07 A | 2006-07-17 A | EM02KCV160, EM02KPI140, EK000CV045, EM02KPI200 FF+10d, EM02UPICBF FF+10d, EM02UPIFWF FF+10d, EM02UPIOWF FF+10d, PK000MJ37T FF+10d, PK000MJ38T FF+10d, PK000ML42N FF+10d, PK000ML43N FF+10d, PK02KMF05 FF+10d, PK02KMD06 FF+10d, PK02KMD10 FF+10d, PK02KMD11 FF+10d, EM02UPICBF F1+10d, EM02UPIOWF F1+10d, EM02UPIFWF F1+10d, EM02UPI190 FF+10d, EK020PI013 FF+10d, PK02KMJV01 FF+10d, PK02KMJV02 FF+10d, PK02KMJV03 FF+10d, ZZ1620 FF+10d, ZZ2040 FF+10d, PK02KMLV02 FF+10d, PK02KMLV05 FF+10d | 100% | 2006-06-07 | 2006-07-04 | 2006-07-29 | 164 | 0 | 0 | 02K | CV164 | 02 | EM | C30 | 02K | CV | C | E | 19 | 17 | E4B4 | C5 | 10 | PS |  |  |  |  |  |  |
| EM02DCV122 |  | 02D Update Model Struct Steel & Issue Dwgs - IFC | 30d | 2006-06-08 A | 2006-07-10 A | EM02DCV120, EM02DPI132, EM02DPI200 FF+15d, EM02UPICBF FF+15d, EM02UPIFWF FF+15d, EM02UPIOWF FF+15d, EM02DPI136 FF+15d, PK000MJ37T FF+15d, EM02UPICBF F1+15d, EM02UPIOWF F1+15d, EM02UPIFWF F1+15d, EM02UPI190 FF+15d, EK020PI013 FF+15d | 100% | 2006-06-12 | 2006-07-21 | 2006-07-29 | 122 | 0 | 0 | 02D | CV122 | 02 | EM | S20 | 02D | CV | S | E | 33 | 26 | E4B4 | C4 | 15 | PS |  |  |  |  |  |  |

Notes:
- EM02BCV164: user_text1: Early Foundations IFC & Loc Plan Issue - 10 Apr
- EM02NCV164: user_text1: Resources Issues.
- EM02ECV122: user_text1: Early Issue.
- EM02JCV128: user_text1: Early Struct Fdn IFC Issues - 06 Apr
- EM02JCV164: user_text1: Early Equip Fnd IFC Issues - 06 Apr
- EM02YCV122: user_text1: Will issue except for silencer area.
- EM02LCV164: user_text1: Early IFC Issue - 101-E,MJ302 107-J,MU310 109-L. 3 Pumps left to IFC.
- EM02MCV164: user_text1: Early IFC Issue - 102-B,105-D
- EM02YCV133: user_text1: Will issue except for silencer area.
- EM02HCV164: user_text1: Early issue of Fdn. 103-D IFC.
- EM02CCV128: user_text1: August milestone. Sep. milestone.
- EM02JCV122: user_text1: Early Issue.
- EM02LCV122: user_text1: August Milestone.
- EM02DCV122: user_text1: Early Issue.

| ID | Activity | Duration | Start | Finish | Predecessors | Complete | Remaining | Planned start | Planned finish | Total float | Free float | Constraint | zData Date | Sequence | PCA Criticality Index | PCA Duration Sensitivity | User Defined Field 1 | User Definer Field 2 | EB02 - UNIT | EB01 - RESP | EB06 - WORK OP | EB03 - AREA | EB05 - DISCIPLINE | EB10 - KEY | EB04 - CLASS | EB00 - EPC | EB15 - Civil / U/G Path of Construction | EB16 - Piping Path of Construction | EB17 - Suffix | user_integer2 | user_text1 | EB11 - FLAG | EB14 - RISK | Optimistic Duration | Most Likely Duration | Pessimistic Duration | EB22 - Critical Actvities |
| --- | --- | --- | --- | --- | --- | --- | --- | --- | --- | --- | --- | --- | --- | --- | --- | --- | --- | --- | --- | --- | --- | --- | --- | --- | --- | --- | --- | --- | --- | --- | --- | --- | --- | --- | --- | --- | --- |
| EM02ACV126 | 02A Conceptual Misc. Steel Design/ Model | 20d | 2006-06-09 A | 2006-07-20 A | EM02ACV120 FF+10d, EM02API136 FF+4d | 100% |  | 2006-06-12 | 2006-07-07 |  |  |  | 2006-07-29 | 126 | 0 | 0 | 02A | CV126 | 02 | EM | S30 | 02A | CV | C2 | S | E | 36 | 25 | E4B4 |  |  |  |  |  |  |  |  |
| EM02LCV166 | 02L Conceptual Misc. Foundation Design/ Model | 15d | 2006-06-12 A | 2006-08-01 A | EM02LCV160 FF+10d, EM02LPI132, EM02LPI136 FF+5d | 100% |  | 2006-06-22 | 2006-07-12 |  |  |  | 2006-07-29 | 166 | 0 | 0 |  |  | 02 | EM | C60 | 02L | CV | C3 | C | E | 23 | 19 | E4B4 |  |  |  |  |  |  |  |  |
| EM02JCV166 | 02J Conceptual Misc. Foundation Design/ Model | 15d | 2006-06-13 A | 2006-07-12 A | EM02JCV160 FF+10d, EM02JPI132, EM02JPI136 FF+4d | 100% |  | 2006-06-22 | 2006-07-12 |  |  |  | 2006-07-29 | 166 | 0 | 0 | 02J | CV166 | 02 | EM | C60 | 02J | CV | C3 | C | E | 18 | 30 | E4B4 |  |  |  |  |  |  |  |  |
| EM02ACV166 | 02A Conceptual Misc. Foundation Design/ Model | 15d | 2006-06-14 A | 2006-07-13 A | EM02ACV160 FF+10d, EM02API136 FF+5d | 100% |  | 2006-06-20 | 2006-07-10 |  |  |  | 2006-07-29 | 166 | 0 | 0 | 02A | CV166 | 02 | EM | C60 | 02A | CV | C3 | C | E | 36 | 25 | E4B4 |  |  |  |  |  |  |  |  |
| EM02ECV166 | 02E Conceptual Misc. Foundations Design/ Model | 15d | 2006-06-14 A | 2006-07-17 A | EM02ECV160 FF+10d, EM02EPI136 FF+1d, EM02EPI132 | 100% |  | 2006-06-15 | 2006-07-05 |  |  |  | 2006-07-29 | 166 | 0 | 0 | 02E | CV166 | 02 | EM | C60 | 02E | CV | C3 | C | E | 32 | 15 | E4B4 |  |  |  |  |  |  |  |  |
| EM02LCV126 | 02L Conceptual Misc. Steel Design/ Model | 20d | 2006-06-14 A | 2006-08-01 A | EM02LCV120 FF+10d, EM02LPI132, EM02LPI136 FF+5d | 100% |  | 2006-06-14 | 2006-07-11 |  |  |  | 2006-07-29 | 126 | 0 | 0 |  |  | 02 | EM | S30 | 02L | CV | C2 | S | E | 23 | 19 | E4B4 |  |  |  |  |  |  |  |  |
| EM02HCV122 | 02H Update Model Struct Steel & Issue Dwgs - IFC | 15d | 2006-06-19 A | 2006-08-08 A | EM02HCV120, EM02HPI132, EM02HPI200 FF+15d, EM02UPICBF FF+15d, EM02UPIFWF FF+15d, EM02UPIOWF FF+15d, EM02UPI190 FF+15d, EK020PI013 FF+15d | 100% |  | 2006-08-29 | 2006-09-18 |  |  |  | 2006-07-29 | 122 | 0 | 0 | 02H | CV122 | 02 | EM | S20 | 02H | CV | C4 | S | E | 11 | 20 | E4B4 | 15 | August Milestone. | PS |  |  |  |  |  |
| EM02MCV122 | 02M Update Model Struct Steel & Issue Dwgs - IFC | 25d | 2006-06-19 A | 2006-07-31 A | EM02MCV120 FF+15d, EM02MPI132, EM02UPICBF FF+15d, EM02UPIFWF FF+15d, EM02UPIOWF FF+15d, EM02MPI200 FF+15d, EM02MPI136 FF+15d, EM02UPI190 FF+15d, EK020PI013 FF+15d | 100% |  | 2006-06-26 | 2006-07-28 |  |  |  | 2006-07-29 | 122 | 0 | 0 | 02M | CV122 | 02 | EM | S20 | 02M | CV | C4 | S | E | 24 | 28 | E4B4 | 15 |  | PS |  |  |  |  |  |
| EM02MCV166 | 02M Conceptual Misc. Foundation Design/ Model | 15d | 2006-06-19 A | 2006-07-17 A | EM02MCV160 FF+10d, EM02MPI132, EM02MPI136 FF+5d | 100% |  | 2006-06-26 | 2006-07-14 |  |  |  | 2006-07-29 | 166 | 0 | 0 | 02M | CV166 | 02 | EM | C60 | 02M | CV | C3 | C | E | 24 | 28 | E4B4 |  |  |  |  |  |  |  |  |
| EM02MCV126 | 02M Conceptual Misc. Steel Design/ Model | 20d | 2006-06-19 A | 2006-07-14 A | EM02MCV120 FF+10d, EM02MPI132, EM02MPI136 FF+5d | 100% |  |  |  |  |  |  | 2006-07-29 | 126 | 0 | 0 | 02M | CV126 | 02 | EM | S30 | 02M | CV | C2 | S | E | 24 | 28 | E4B4 |  | 14-Jul-06 |  |  |  |  |  |  |
| EM02CCV126 | 02C Conceptual Misc. Steel Design/ Model | 20d | 2006-06-28 A | 2006-08-10 A | EM02CPI132, EM02CPI136 SS+3d | 100% |  | 2006-06-28 | 2006-07-25 |  |  |  | 2006-07-29 | 126 | 0 | 0 | 02C | CV126 | 02 | EM | S30 | 02C | CV | C2 | S | E | 14 | 21 | E4B4 |  |  |  |  |  |  |  |  |
| EM02CCV122 | 02C Update Model Struct Steel & Issue Dwgs - IFC | 27d | 2006-07-03 A | 2006-09-15 A | EM02CCV120, EM02CPI132, EM02CPI200 FF+15d, EM02UPICBF FF+15d, EM02UPIFWF FF+15d, EM02UPIOWF FF+15d, EM02CPI136 SS+8d, PK000MJ75N FF+15d, PK000MJ37T FF+15d, PK000MJ38T FF+15d, EM02UPI190 FF+15d, EK020PI013 FF+15d | 100% |  | 2006-07-10 | 2006-08-15 |  |  |  | 2006-07-29 | 122 | 0 | 0 | 02A | CV122 | 02 | EM | S20 | 02C | CV | C4 | S | E | 14 | 21 | E4B4 | 15 | August Milestone. Sep. milestone. | PS |  |  |  |  |  |
| EM02FCV166 | 02F Conceptual Misc. Foundations Design/ Model | 15d | 2006-07-03 A | 2006-07-20 A | EM02FCV160 FF+10d, EM02FPI136 FF+5d, EM02FPI132 | 100% |  | 2006-07-03 | 2006-07-21 |  |  |  | 2006-07-29 | 166 | 0 | 0 | 02F | CV166 | 02 | EM | C60 | 02F | CV | C3 | C | E | 29 | 16 | E4B4 |  |  |  |  |  |  |  |  |
| EM02GCV164 | 02G Update Model Major Eq. Fdns & Issue Dwgs-IFC | 29d | 2006-07-04 A | 2006-10-03 A | EM02GCV160, EM02GPI132 SS, EK000CV045, EM02GPI200 FF+10d, EM02UPICBF FF+10d, EM02UPIFWF FF+10d, EM02UPIOWF FF+10d, PK02GMJV04 FF+10d, PK02GMJV05 FF+10d, EK000CV071, PK02GMJV06 FF+10d, PK02GMJV01, PK02GMJV09 FF+10d, ZZ1550 FF+10d, PK02GMLV02 FF+10d, PK02GMLV05 FF | 100% |  | 2006-07-04 | 2006-08-11 |  |  |  | 2006-07-29 | 164 | 0 | 0 | 02G | CV164 | 02 | EM | C30 | 02G | CV | C5 | C | E | 9 | 22 | E4B4 | 15 |  | PS |  |  |  |  |  |
| EM02CCV166 | 02C Conceptual Misc. Foundation Design/ Model | 15d | 2006-07-05 A | 2006-09-21 A | EM02CCV160 FF+10d, EM02CPI132 | 100% |  | 2006-07-12 | 2006-08-01 |  |  |  | 2006-07-29 | 166 | 0 | 0 | 02C | CV166 | 02 | EM | C60 | 02C | CV | C3 | C | E | 14 | 21 | E4B4 |  |  |  |  |  |  |  |  |
| EM02FCV164 | 02F Update Model Major Eq. Fdns & Issue Dwgs-IFC | 10d | 2006-07-10 A | 2006-08-11 A | EM02FCV160, EM02FPI132, EK000CV045, EM02FPI200 FF+10d, EM02UPICBF FF+10d, EM02UPIFWF FF+10d, EM02UPIOWF FF+10d, PK000MJ34N FF+10d, EM02UPICBF F1+10d, EM02UPIOWF F1+10d, EM02UPIFWF F1+10d, EM02UPI190 FF+10d, EK020PI013 FF+10d, PK02FMJV02 FF+10d, PK02FMJV04 FF+10d, PK02FMUV02 FF+10d | 100% |  | 2006-07-10 | 2006-07-21 |  |  |  | 2006-07-29 | 164 | 0 | 0 | 02F | CV164 | 02 | EM | C30 | 02F | CV | C5 | C | E | 29 | 16 | E4B4 | 10 | August Milestone. | PS |  |  |  |  |  |
| EM02MCV128 | 02M Update Model Structural Fdns & Issue Dwgs - IFC | 20d | 2006-07-10 A | 2006-08-21 A | EM02MCV125, EM02MPI132, EM02MCV122 FF+1d, EK000CV045, EM02MPI200 FF+10d, EM02UPICBF FF+10d, EM02UPIFWF FF+10d, EM02UPIOWF FF+10d, EM02UPICBF F1+10d, EM02UPIOWF F1+10d, EM02UPIFWF F1+10d, EM02UPI190 FF+10d, EK020PI013 FF+10d | 100% |  | 2006-07-10 | 2006-08-04 |  |  |  | 2006-07-29 | 128 | 0 | 0 | 02M | CV128 | 02 | EM | C50 | 02M | CV | C5 | C | E | 24 | 28 | E4B4 | 15 | August Milestone. | PS |  |  |  |  |  |
| EM02KCV126 | 02K Conceptual Misc. Steel Design/ Model | 20d | 2006-07-11 A | 2006-08-30 A | EM02KPI140, EM02KPI136 SF+3d | 100% |  | 2006-07-11 | 2006-08-07 |  |  |  | 2006-07-29 | 126 | 0 | 0 | 02K | CV126 | 02 | EM | S30 | 02K | CV | C2 | S | E | 19 | 17 | E4B4 |  |  |  |  |  |  |  |  |
| EM02ACV127 | 02A Model Misc. Steel & Issue Dwgs - IFC | 30d | 2006-07-20 A | 2006-09-08 A | EM02ACV126, EM02API135 SS+10d | 100% |  | 2006-07-21 | 2006-08-31 |  |  |  | 2006-07-29 | 127 | 0 | 0 | 02A | CV127 | 02 | EM | S30 | 02A | CV | C4 | S | E | 36 | 25 | E4B4 | 5 |  | PS |  |  |  |  |  |
| EM02MCV127 | 02M Model Misc. Steel & Issue Dwgs - IFC | 5d | 2006-07-20 A | 2006-08-21 A | EM02MCV126 | 100% |  | 2006-07-28 | 2006-08-03 |  |  |  | 2006-07-29 | 127 | 0 | 0 | 02M | CV127 | 02 | EM | S30 | 02M | CV | C4 | S | E | 24 | 28 | E4B4 | 5 |  | PS |  |  |  |  |  |
| EM02MCV167 | 02M Update Model Misc Fdns & Issue Dwgs - IFC | 5d | 2006-07-20 A | 2006-08-21 A | EM02MCV166 FS+3d, EK000CV045 | 100% |  | 2006-07-20 | 2006-07-26 |  |  |  | 2006-07-29 | 167 | 0 | 0 | 02M | CV167 | 02 | EM | C60 | 02M | CV | C5 | C | E | 24 | 28 | E4B4 | 5 |  | PS |  |  |  |  |  |
| EMO2YCV124 | 02Y Structl Fdns Issue Dwgs - IFC Silencer Area | 37d | 2006-07-24 A | 2006-09-05 A | EM02YCV130, EM02YPI132 FS+14d, EM02YCV123 FF, EK000CV045 FF, EM02UPICBF FF+10d, EM02UPIFWF FF+10d, EM02UPIOWF FF+10d, EK020PI012 FF+10d, EM02UPI190 FF+10d, EK020PI013 FF+10d, EM02YCV133 | 100% |  | 2006-08-14 | 2006-10-03 |  |  |  | 2006-07-29 | 128 | 0 | 0 | 02Y | CV128 | 02 | EM | C40 | 02Y | CV | C5 | C | E | 8 | 9 | E4B4 | 15 |  | PS | 17 |  |  |  |  |
| EM02LCV128 | 02L Update Model Structural Fdns & Issue Dwgs - IFC | 15d | 2006-07-24 A | 2006-08-23 A | EM02LCV125, EM02LPI132, EM02LCV122 FF+5d, EK000CV045, EM02LPI200 FF+10d, EM02UPICBF FF+10d, EM02UPIFWF FF+10d, EM02UPIOWF FF+10d, PK000MJ32N FF+10d, PK000MJ37T FF+10d, PK000MJ38T FF+10d, PK000ML42N FF+10d, EM02UPICBF F1+10d, EM02UPIOWF F1+10d, EM02UPIFWF F1+10d, EM02UPI190 FF+10d, EK020PI013 FF+10d | 100% |  | 2006-07-24 | 2006-08-11 |  |  |  | 2006-07-29 | 128 | 0 | 0 |  |  | 02 | EM | C50 | 02L | CV | C5 | C | E | 23 | 19 | E4B4 | 15 | August Milestone. | PS |  |  |  |  |  |
| EM02HCV126 | 02H Conceptual Misc. Steel Design/ Model | 20d | 2006-07-27 A | 2006-09-19 A | EM02HCV120 FF+10d, EM02HPI132 | 100% |  | 2006-08-04 | 2006-08-31 |  |  |  | 2006-07-29 | 126 | 0 | 0 | 02H | CV126 | 02 | EM | S30 | 02H | CV | C2 | S | E | 11 | 20 | E4B4 |  |  |  |  |  |  |  |  |
| EM02HCV166 | 02H Conceptual Misc. Foundation Design/ Model | 15d | 2006-07-27 A | 2006-08-16 A | EM02HCV160 FF+10d, EM02HPI132 | 100% |  | 2006-08-04 | 2006-08-24 |  |  |  | 2006-07-29 | 166 | 0 | 0 | 02H | CV166 | 02 | EM | C60 | 02H | CV | C3 | C | E | 11 | 20 | E4B4 |  |  |  |  |  |  |  |  |
| EM02YCV123 | 02Y Struct Steel Issue Dwgs - IFC Silencer Area | 46d | 2006-07-27 A | 2006-08-30 A | EM02YCV120 FF+15d, EM02YPI132, EM02UPICBF FF+15d, EM02UPIFWF FF+15d, EM02UPIOWF FF+15d, EM02YPI136 FF+15d, EK020PI012 FF, EM02YCV122 | 100% |  | 2006-08-14 | 2006-10-16 |  |  |  | 2006-07-29 | 122 | 24.7 | 2.7 | 02Y | CV122 | 02 | EM | S10 | 02Y | CV | C4 | S | E | 8 | 9 | E4B4 | 15 | New activity | PS | 17 | 40 | 46 | 50 | C3 |
| EM02ACV167 | 02A Update Model Misc Fdns & Issue Dwgs - IFC | 30d | 2006-07-31 A | 2006-09-08 A | EM02ACV166, EM02ACV127 FF+10d, EK000CV045, EM02API135 SS+10d | 100% |  |  |  |  |  |  | 2006-07-29 | 167 | 0 | 0 | 02A | CV167 | 02 | EM | C60 | 02A | CV | C5 | C | E | 36 | 25 | E4B4 | 5 |  | PS |  |  |  |  |  |
| EM02ECV126 | 02E Conceptual Misc. Steel Design/ Model | 20d | 2006-08-08 A | 2006-09-08 A | EM02ECV120 FF+10d, EM02EPI136 FF+5d, EM02EPI132, EM02EPI135 SS+5d | 100% |  | 2006-08-08 | 2006-09-04 |  |  |  | 2006-07-29 | 126 | 0 | 0 | 02E | CV126 | 02 | EM | S30 | 02E | CV | C2 | S | E | 32 | 15 | E4B4 |  |  |  |  |  |  |  |  |
| EM02KCV166 | 02K Conceptual Misc. Foundation Design/ Model | 15d | 2006-08-10 A | 2006-08-30 A | EM02KCV160 FF+10d, EM02KPI140 | 100% |  | 2006-08-17 | 2006-09-06 |  |  |  | 2006-07-29 | 166 | 0 | 0 | 02K | CV166 | 02 | EM | C60 | 02K | CV | C3 | C | E | 19 | 17 | E4B4 |  |  |  |  |  |  |  |  |
| EM02DCV127 | 02D Model Misc. Steel & Issue Dwgs - IFC | 5d | 2006-08-14 A | 2006-08-24 A | EM02DCV126, EM02DPI135 FF+10d | 100% |  | 2006-08-14 | 2006-08-18 |  |  |  | 2006-07-29 | 127 | 0 | 0 | 02D | CV127 | 02 | EM | S30 | 02D | CV | C4 | S | E | 33 | 26 | E4B4 | 5 |  | PS |  |  |  |  |  |
| EM02DCV167 | 02D Update Model Misc Fdns & Issue Dwgs - IFC | 5d | 2006-08-14 A | 2006-08-24 A | EM02DCV166, EM02DCV127 FF, EK000CV045, EM02DPI135 FF+10d | 100% |  | 2006-08-14 | 2006-08-18 |  |  |  | 2006-07-29 | 167 | 0 | 0 | 02D | CV167 | 02 | EM | C60 | 02D | CV | C5 | C | E | 33 | 26 | E4B4 | 5 |  | PS |  |  |  |  |  |
| EM02FCV126 | 02F Conceptual Misc. Steel Design/ Model | 20d | 2006-08-16 A | 2006-11-06 A | EM02FPI136 FF+5d, EM02FPI132, EM02FPI135 FF+10d | 100% |  | 2006-08-16 | 2006-09-12 |  |  |  | 2006-07-29 | 126 | 0 | 0 | 02F | CV126 | 02 | EM | S30 | 02F | CV | C2 | S | E | 29 | 16 | E4B4 |  |  |  |  |  |  |  |  |
| EM02ECV127 | 02E Model Misc. Steel & Issue Dwgs - IFC | 5d | 2006-09-11 A | 2006-09-15 A | EM02ECV126 | 100% |  | 2006-09-19 | 2006-09-25 |  |  | start on or after 2006-09-19 | 2006-07-29 | 127 | 0 | 0 | 02E | CV127 | 02 | EM | S30 | 02E | CV | C4 | S | E | 32 | 15 | E4B4 | 5 |  | PS |  |  |  |  |  |
| EM02ECV167 | 02E Update Model Misc Fdns & Issue Dwgs - IFC | 6d | 2006-09-11 A | 2006-09-15 A | EM02ECV166, EM02ECV127 FF, EK000CV045, EM02EPI135 SS+25d | 100% |  | 2006-09-18 | 2006-09-25 |  |  | start on or after 2006-09-18 | 2006-07-29 | 167 | 0 | 0 | 02E | CV167 | 02 | EM | C60 | 02E | CV | C5 | C | E | 32 | 15 | E4B4 | 5 |  | PS |  |  |  |  |  |
| EM02LCV127 | 02L Model Misc. Steel & Issue Dwgs - IFC | 5d | 2006-09-21 A | 2006-09-27 A | EM02LCV126, EM02LPI135 FF+10d | 100% |  | 2006-10-16 | 2006-10-20 |  |  |  | 2006-07-29 | 127 | 0.9 | 0.5 |  |  | 02 | EM | S30 | 02L | CV | C4 | S | E | 23 | 19 | E4B4 | 5 |  | PS | 17 | 4 | 5 | 10 |  |
| EM02LCV167 | 02L Model Misc Fdns & Issue Dwgs - IFC | 5d | 2006-09-21 A | 2006-10-27 A | EM02LCV166, EM02LCV127 FF, EK000CV045, EM02LPI135 FF+10d | 100% |  | 2006-10-16 | 2006-10-20 |  |  |  | 2006-07-29 | 167 | 0 | 0 |  |  | 02 | EM | C60 | 02L | CV | C5 | C | E | 23 | 19 | E4B4 | 5 |  | PS |  |  |  |  |  |
| EM02GCV122 | 02G Update Model Struct Steel & Issue Dwgs - IFC | 35d | 2006-09-25 A | 2007-01-26 A | EM02GCV120 FF+15d, EM02GPI132, EM02GPI200 FF+15d, EM02UPICBF FF+15d, EM02UPIFWF FF+15d, EM02UPIOWF FF+15d, EM02GPI136 FF+15d, PK02GML100 FF+15d, PK000MJ22N FF+15d, PK000MJ22N F1+15d, PK000MJ37T FF+15d, PK000MJ38T FF+15d, PK000MJ75N FF+15d, EM02UPICBF F1+15d, EM02UPIOWF F1+15d, EM02UPIFWF F1+15d, EM02UPI190 FF+15d, EK020PI013 FF+15d | 100% |  | 2006-09-25 | 2006-11-10 |  |  |  | 2006-07-29 | 122 | 0 | 0 | 02A | CV122 | 02 | EM | S20 | 02G | CV | C4 | S | E | 9 | 22 | E4B4 | 15 |  | PS |  |  |  |  |  |
| EM02GCV126 | 02G Conceptual Misc. Steel Design/ Model | 20d | 2006-09-25 A | 2006-12-08 A | EM02GPI132, EM02GPI132 FF, EM02GPI136 FF+5d | 100% |  | 2006-09-25 | 2006-10-20 |  |  |  | 2006-07-29 | 126 | 0 | 0 | 02G | CV126 | 02 | EM | S30 | 02G | CV | C2 | S | E | 9 | 22 | E4B4 |  |  |  |  |  |  |  |  |
| EM02GCV166 | 02G Conceptual Misc. Foundations Design/ Model | 15d | 2006-10-02 A | 2006-12-08 A | EM02GCV160 FF+10d, EM02GPI132, EM02GPI136 FF | 100% |  | 2006-10-02 | 2006-10-20 |  |  |  | 2006-07-29 | 166 | 0 | 0 | 02G | CV166 | 02 | EM | C60 | 02G | CV | C3 | C | E | 9 | 22 | E4B4 |  |  |  |  |  |  |  |  |
| EM02JCV127 | 02J Model Misc. Steel & Issue Dwgs - IFC | 5d | 2006-10-04 A | 2006-10-27 A | EM02JCV126 | 100% |  | 2006-10-04 | 2006-10-10 |  |  |  | 2006-07-29 | 127 | 0 | 0 | 02J | CV127 | 02 | EM | S30 | 02J | CV | C4 | S | E | 18 | 30 | E4B4 | 5 |  | PS |  |  |  |  |  |
| EM02JCV167 | 02J Update Model Misc Fdns & Issue Dwgs - IFC | 5d | 2006-10-04 A | 2006-10-27 A | EM02JCV166, EM02JCV127 FF, EK000CV045 | 100% |  | 2006-10-04 | 2006-10-10 |  |  |  | 2006-07-29 | 167 | 0 | 0 | 02J | CV167 | 02 | EM | C60 | 02J | CV | C5 | C | E | 18 | 30 | E4B4 | 5 |  | PS |  |  |  |  |  |
| EM02KCV127 | 02K Model Misc. Steel & Issue Dwgs - IFC | 5d | 2006-10-09 A | 2007-02-09 | EM02KCV126, EM02KPI135 FF+11d |  | 10d | 2006-10-09 | 2006-10-13 | 100d | 0d |  | 2006-07-29 | 127 | 0 | 0 | 02K | CV127 | 02 | EM | S30 | 02K | CV | C4 | S | E | 19 | 17 | E4B4 | 5 |  | PS |  |  |  |  |  |
| EM02KCV167 | 02K Update Model Misc Fdns & Issue Dwgs - IFC | 5d | 2006-10-09 A | 2007-02-09 | EM02KCV166, EM02KCV127 FF, EK000CV045, EM02KPI135 FF+5d |  | 10d | 2006-10-09 | 2006-10-13 | 207d | 13d |  | 2006-07-29 | 167 | 0 | 0 | 02K | CV167 | 02 | EM | C60 | 02K | CV | C5 | C | E | 19 | 17 | E4B4 | 5 |  | PS |  |  |  |  |  |
| EM02FCV127 | 02F Model Misc. Steel & Issue Dwgs - IFC | 5d | 2006-11-13 A | 2006-12-08 A | EM02FCV126 | 100% |  | 2006-11-13 | 2006-11-17 |  |  |  | 2006-07-29 | 127 | 0 | 0 | 02F | CV127 | 02 | EM | S30 | 02F | CV | C4 | S | E | 29 | 16 | E4B4 | 5 |  | PS |  |  |  |  |  |
| EM02FCV167 | 02F Update Model Misc Fdns & Issue Dwgs - IFC | 5d | 2006-11-13 A | 2006-12-08 A | EM02FCV166, EM02FCV127 FF, EK000CV045, EM02FPI135 FF+10d | 100% |  | 2006-11-13 | 2006-11-17 |  |  |  | 2006-07-29 | 167 | 0 | 0 | 02F | CV167 | 02 | EM | C60 | 02F | CV | C5 | C | E | 29 | 16 | E4B4 | 5 |  | PS |  |  |  |  |  |
| EM02GCV128 | 02G Update Model Structural Fdns & Issue Dwgs - IFC | 30d | 2006-11-13 A | 2007-01-04 A | EM02GCV125, EM02GPI132, EM02GCV122 FF, EK000CV045, EM02UPICBF FF+10d, EM02UPIFWF FF+10d, EM02UPIOWF FF+10d, EM02GPI136 FF+10d, EM02GPI200 FF+10d, PK02GML100 FF+10d, PK000MJ22N FF+10d, PK000MJ22N F1+10d, PK000MJ37T FF+10d, PK000MJ38T FF+10d, PK000MJ75N FF+10d, EM02UPICBF F1+10d, EM02UPIOWF F1+10d, EM02UPIFWF F1+10d, EM02UPI190 FF+10d, EK020PI013 FF+10d | 100% |  | 2006-11-13 | 2006-12-22 |  |  |  | 2006-07-29 | 128 | 0 | 0 | 02D | CV128 | 02 | EM | C50 | 02G | CV | C5 | C | E | 9 | 22 | E4B4 | 15 |  | PS |  |  |  |  |  |
| EM02CCV127 | 02C Model Misc. Steel & Issue Dwgs - IFC | 5d | 2006-12-04 A | 2006-12-08 A | EM02CCV126, EM02CPI135 SS+6d | 100% |  |  |  |  |  | start on or after 2006-11-27 | 2006-07-29 | 127 | 0 | 0 | 02C | CV127 | 02 | EM | S30 | 02C | CV | C4 | S | E | 14 | 21 | E4B4 | 5 |  | PS | 17 |  |  |  |  |
| EM02CCV167 | 02C Update Model Misc Fdns & Issue Dwgs - IFC | 5d | 2006-12-04 A | 2006-12-08 A | EM02CCV166, EM02CCV127 FF, EK000CV045 | 100% |  |  |  |  |  |  | 2006-07-29 | 167 | 0 | 0 | 02C | CV167 | 02 | EM | C60 | 02C | CV | C5 | C | E | 14 | 21 | E4B4 | 5 |  | PS |  |  |  |  |  |
| EM02GCV127 | 02G Model Misc. Steel & Issue Dwgs - IFC | 5d | 2006-12-11 A | 2007-01-15 A | EM02GCV126 SS | 100% |  | 2006-12-11 | 2006-12-15 |  |  | start on or after 2006-12-12 | 2006-07-29 | 127 | 9.8 | 0 | 02G | CV127 | 02 | EM | S30 | 02G | CV | C4 | S | E | 9 | 22 | E4B4 | 5 |  | PS |  | 4 | 5 | 10 |  |
| EM02GCV167 | 02G Update Model Misc Fdns & Issue Dwgs - IFC | 5d | 2006-12-11 A | 2007-01-15 A | EM02GCV166, EM02GCV127 FF, EK000CV045 | 100% |  | 2006-12-11 | 2006-12-15 |  |  | start on or after 2006-12-12 | 2006-07-29 | 167 | 0 | 0 | 02G | CV167 | 02 | EM | C60 | 02G | CV | C5 | C | E | 9 | 22 | E4B4 | 5 |  | PS |  |  |  |  |  |
| EM02HCV127 | 02H Model Misc. Steel & Issue Dwgs - IFC | 5d | 2006-12-11 A | 2006-12-15 A | EM02HCV126 | 100% |  |  |  |  |  |  | 2006-07-29 | 127 | 0 | 0 | 02H | CV127 | 02 | EM | S30 | 02H | CV | C4 | S | E | 11 | 20 | E4B4 | 5 |  | PS |  |  |  |  |  |
| EM02HCV167 | 02H Update Model Misc Fdns & Issue Dwgs - IFC | 5d | 2006-12-11 A | 2006-12-15 A | EM02HCV166, EM02HCV127 SS, EK000CV045, EM02HPI135 FF+10d | 100% |  |  |  |  |  | start on or after 2006-12-13 | 2006-07-29 | 167 | 0 | 0 | 02H | CV167 | 02 | EM | C60 | 02H | CV | C5 | C | E | 11 | 20 | E4B4 | 5 |  | PS |  |  |  |  |  |

| ID | WBS | Activity | Duration | Start | Finish | Predecessors | Complete | Remaining | Planned start | Planned finish | Total float | Free float | Constraint | Expected finish | Calendar | zData Date | Sequence | PCA Criticality Index | PCA Duration Sensitivity | User Defined Field 1 | User Definer Field 2 | EB02 - UNIT | EB01 - RESP | EB06 - WORK OP | EB03 - AREA | EB05 - DISCIPLINE | EB04 - CLASS | EB11 - FLAG | EB00 - EPC | EB15 - Civil / U/G Path of Construction | EB16 - Piping Path of Construction | EB17 - Suffix | EB10 - KEY | EB12 - TEMP | Optimistic Duration | Most Likely Duration | Pessimistic Duration | user_text1 |
| --- | --- | --- | --- | --- | --- | --- | --- | --- | --- | --- | --- | --- | --- | --- | --- | --- | --- | --- | --- | --- | --- | --- | --- | --- | --- | --- | --- | --- | --- | --- | --- | --- | --- | --- | --- | --- | --- | --- |
|  | EL | **Electrical Engineering** |  | 2005-07-27 | 2007-03-01 |  |  |  |  |  |  |  |  |  |  |  |  |  |  |  |  |  |  |  |  |  |  |  |  |  |  |  |  |  |  |  |  |  |
| EM02AEL120 |  | 02A Electrical Conceptual Layouts | 40d | 2005-07-27 A | 2005-09-30 A | EK02API030 | 100% |  | 2005-07-27 | 2005-09-20 |  |  |  |  |  | 2006-07-29 | 120 | 0 | 0 | 02A | EL120 | 02 | EM | P20 | 02A | EL | E | X | E | 36 | 25 | E4B4 |  |  |  |  |  |  |
| EM02BEL120 |  | 02B Electrical Conceptual Layouts | 40d | 2005-07-27 A | 2005-10-21 A | EK02BPI030 | 100% |  | 2005-07-27 | 2005-09-20 |  |  |  |  |  | 2006-07-29 | 120 | 0 | 0 | 02B | EL120 | 02 | EM | P20 | 02B | EL | E | X | E | 34 | 34 | E4B4 |  |  |  |  |  |  |
| EM02EEL120 |  | 02E Electrical Conceptual Layouts | 40d | 2005-08-01 A | 2005-09-30 A | EK02EPI030 | 100% |  | 2005-09-26 | 2005-11-18 |  |  |  |  |  | 2006-07-29 | 120 | 0 | 0 | 02E | EL120 | 02 | EM | P20 | 02E | EL | E | X | E | 32 | 15 | E4B4 |  |  |  |  |  |  |
| EM02YEL120 |  | 02Y Electrical Conceptual Layouts | 35d | 2005-08-08 A | 2005-09-30 A | EK020SY050 | 100% |  | 2005-08-01 | 2005-09-16 |  |  |  |  |  | 2006-07-29 | 120 | 0 | 0 | 02Y | EL120 | 02 | EM | P20 | 02Y | EL | E |  | E | 8 | 9 | E4B4 |  |  |  |  |  |  |
| EM02HEL120 |  | 02H Electrical Conceptual Layouts | 30d | 2005-08-11 A | 2005-09-30 A | EK02HPI030 | 100% |  | 2005-08-29 | 2005-10-07 |  |  |  |  |  | 2006-07-29 | 120 | 0 | 0 | 02H | EL120 | 02 | EM | P20 | 02H | EL | E | X | E | 11 | 20 | E4B4 |  |  |  |  |  |  |
| EM02LEL120 |  | 02L Electrical Conceptual Layouts | 30d | 2005-08-23 A | 2005-11-03 A | EK02LPI030 | 100% |  | 2005-09-23 | 2005-11-03 |  |  |  |  |  | 2006-07-29 | 120 | 0 | 0 |  |  | 02 | EM | P20 | 02L | EL | E |  | E | 23 | 19 | E4B4 |  |  |  |  |  |  |
| EM02GEL120 |  | 02G Electrical Conceptual Layouts | 30d | 2005-09-05 A | 2005-12-07 A | EK020SY050, EK02GSY170 FF, EK02GPI030 | 100% |  | 2005-10-10 | 2005-11-18 |  |  |  |  |  | 2006-07-29 | 120 | 0 | 0 | 02G | EL120 | 02 | EM | P20 | 02G | EL | E |  | E | 9 | 22 | E4B4 |  |  |  |  |  |  |
| EM02KEL120 |  | 02K Electrical Conceptual Layouts | 40d | 2005-09-05 A | 2005-10-28 A | EK02KPI030, EK02KPI031 FF | 100% |  | 2005-10-10 | 2005-12-02 |  |  |  |  |  | 2006-07-29 | 120 | 0 | 0 | 02K | EL120 | 02 | EM | P20 | 02K | EL | E | X | E | 19 | 17 | E4B4 |  |  |  |  |  |  |
| EM02JEL120 |  | 02J Electrical Conceptual Layouts | 40d | 2005-09-12 A | 2005-12-01 A | EK02JPI030, EK02JPI031 FF | 100% |  | 2005-10-17 | 2005-12-09 |  |  |  |  |  | 2006-07-29 | 120 | 0 | 0 | 02J | EL120 | 02 | EM | P20 | 02J | EL | E | X | E | 18 | 30 | E4B4 |  |  |  |  |  |  |
| EM02MEL120 |  | 02M Electrical Conceptual Layouts | 40d | 2005-09-12 A | 2005-11-18 A | EK02MPI030 | 100% |  | 2005-10-17 | 2005-12-09 |  |  |  |  |  | 2006-07-29 | 120 | 0 | 0 | 02M | EL120 | 02 | EM | P20 | 02M | EL | E |  | E | 24 | 28 | E4B4 |  |  |  |  |  |  |
| EM02NEL120 |  | 02N Electrical Conceptual Layouts | 40d | 2005-09-12 A | 2005-11-04 A | EK02NPI030 | 100% |  | 2005-10-17 | 2005-12-09 |  |  |  |  |  | 2006-07-29 | 120 | 0 | 0 | 02N | EL120 | 02 | EM | P20 | 02N | EL | E |  | E | 39 | 37 | E4B4 |  |  |  |  |  |  |
| EM02CEL120 |  | 02C Electrical Conceptual Layouts | 45d | 2005-09-26 A | 2005-10-28 A | EK02CPI030 | 100% |  | 2005-09-26 | 2005-11-25 |  |  |  |  |  | 2006-07-29 | 120 | 0 | 0 | 02C | EL120 | 02 | EM | P20 | 02C | EL | E |  | E | 14 | 21 | E4B4 |  |  |  |  |  |  |
| EM02QEL120 |  | 02Q Electrical Conceptual Layouts | 25d | 2005-10-10 A | 2005-11-11 A | EK020SY050, EK02QPI030 | 100% |  |  |  |  |  |  |  |  | 2006-07-29 | 120 | 0 | 0 | 02Q | EL120 | 02 | EM | P20 | 02Q | EL | E |  | E | 41 | 35 | E4B4 |  |  |  |  |  |  |
| EM020ELEL2 |  | 02 U/G Electrical Routing Plans - IFC | 100d | 2005-10-17 A | 2006-06-06 A | EM02UPICBD FF, EM02UPIPSD FF, EM02UPIOHD FF, EM02UPIFWD FF, EM02UPICWD FF, EM02UPIOWD FF | 100% |  | 2006-01-30 | 2006-06-16 |  |  |  |  | EBWK - Global | 2006-07-29 |  | 0 | 0 |  |  | 02 | EM | EL2 | 020 | EL | E |  | E |  |  | E4B4 | E1 | X |  |  |  |  |
| EM02FEL120 |  | 02F Electrical Conceptual Layouts | 21d | 2005-10-21 A | 2005-10-28 A | EK02FPI030 | 100% |  | 2005-10-21 | 2005-11-18 |  |  |  |  |  | 2006-07-29 | 120 | 0 | 0 | 02F | EL120 | 02 | EM | P20 | 02F | EL | E |  | E | 29 | 16 | E4B4 |  |  |  |  |  |  |
| EM020ELEH2 |  | 02 Develop & Issue Earthing / Grounding Dwgs - IFC | 114d | 2005-10-25 A | 2006-05-26 A | EK020PI011, EM02LCV160 SS+5d, EM02ACV160 SS+5d, EM02BCV160 SS+5d, EM02DCV160 SS+5d, EM02ECV160 SS+5d, EM02GCV160 SS+5d, EM02JCV160 SS+5d, EM02KCV160 SS+5d, EM02MCV160 SS+5d, EM02NCV160 SS+5d, EM02CCV160 SS+5d, EM02HCV160 SS+5d, EM02API200 FF+15d, EM02BPI200 FF+15d, EM02CPI200 FF+15d, EM02DPI200 FF+15d, EM02EPI200 FF+15d, EM02FPI200 FF+15d, EM02GPI200 SS+5d, EM02HPI200 FF+15d, EM02JPI200 FF+15d, EM02KPI200 FF+15d, EM02LPI200 FF+15d, EM02MPI200 FF+15d, EM02NPI200 FF+15d, EM02PPI200 FF+15d, EM02QPI200 FF+15d, EK020PI012 FF+15d | 100% |  | 2006-01-30 | 2006-07-06 |  |  |  |  | EBWK - Global | 2006-07-29 |  | 0 | 0 |  |  | 02 | EM | EH2 | 020 | EL | E |  | E |  |  | E4B4 | E1 | X |  |  |  |  |
| EM02DEL120 |  | 02D Electrical Conceptual Layouts | 20d | 2005-10-31 A | 2005-12-16 A | EK020SY050, EK02DSY170 FF+14d, EK02DPI030 | 100% |  | 2005-11-11 | 2005-12-08 |  |  |  |  |  | 2006-07-29 | 120 | 0 | 0 | 02D | EL120 | 02 | EM | P20 | 02D | EL | E |  | E | 33 | 26 | E4B4 |  |  |  |  |  |  |
| EM02PEL120 |  | 02P Electrical Conceptual Layouts | 20d | 2005-12-19 A | 2006-01-03 A | EK020SY050, EK02PSY170 FF+20d, EK02PPI030 | 100% |  | 2005-12-19 | 2006-01-17 |  |  |  |  |  | 2006-07-29 | 120 | 0 | 0 | 02P | EL120 | 02 | EM | P20 | 02P | EL | E |  | E | 40 | 36 | E4B4 |  |  |  |  |  |  |
| EM20ELEK2 |  | 02 Develop & Issue Cable Ladder Plans - IFC | 80d | 2006-04-03 A | 2006-08-18 A | EK020EL125, EK020PI011, EM02LPI132, EM02API132, EM02BPI132, EM02DPI132, EM02EPI132, EM02FPI132, EM02GPI132 FF, EM02JPI132, EM02MPI132, EM02NPI132, EM02PPI132, EM02QPI132, EM02YPI132, EM02CPI132, EM02HPI132, EM02API200 FF+20d, EM02BPI200 FF+20d, EM02CPI200 FF+20d, EM02DPI200 FF+20d, EM02EPI200 FF+20d, EM02FPI200 FF+20d, EM02GPI200 FF+20d, EM02HPI200 FF+20d, EM02JPI200 FF+20d, EM02KPI200 FF+20d, EM02LPI200 FF+20d, EM02MPI200 FF+20d, EM02NPI200 FF+20d, EM02PPI200 FF+20d, EM02QPI200 FF+20d, EK020PI012 FF+20d, EK020ELEK1 | 100% |  | 2006-07-13 | 2006-11-01 |  |  |  |  | EBWK - Global | 2006-07-29 |  | 4.5 | 1 |  |  | 02 | EM | EK2 | 020 | EL | E | PS | E |  |  | E4B4 | E1 | X | 140 | 154 | 160 | 02G Planning release was delayed. |
| EM020ELEK2 |  | 02 Develop & Issue Power Plans - IFC | 80d | 2006-05-19 A | 2006-12-28 A | EK020EL125, EK020PI011, EM02LPI132, EM02API132, EM02BPI132, EM02DPI132, EM02EPI132, EM02FPI132, EM02GPI132 SS, EM02JPI132, EM02MPI132, EM02NPI132, EM02PPI132, EM02QPI132, EM02YPI132, EM02CPI132, EM02HPI132, EM02API200 FF+20d, EM02BPI200 FF+20d, EM02CPI200 FF+20d, EM02DPI200 FF+20d, EM02EPI200 FF+20d, EM02FPI200 FF+20d, EM02GPI200 FF+20d, EM02HPI200 FF+20d, EM02JPI200 FF+20d, EM02KPI200 FF+20d, EM02LPI200 FF+20d, EM02MPI200 FF+20d, EM02NPI200 FF+20d, EM02PPI200 FF+20d, EM02QPI200 FF+20d, EK020PI012 FF+20d, EK020ELEK1 | 100% |  | 2006-07-13 | 2006-11-01 |  |  |  |  | EBWK - Global | 2006-07-29 |  | 4.5 | 1 |  |  | 02 | EM | EK2 | 020 | EL | E | PS | E |  |  | E4B4 | E1 | X | 140 | 154 | 160 | 02G Planning release was delayed. |
| EM020ELEJ2 |  | 02 Develop & Issue Lighting Plans - IFC | 120d | 2006-08-16 A | 2006-10-31 A | EM02GPI132 FF+10d, EM02ACV127 FF, EM02DCV127 FF+10d, EM02ECV127 FF, EM02LCV127 FF, EM02MCV127 FF+10d, EK020ELEJ1 FS+10d | 100% |  | 2006-08-16 | 2007-01-30 |  |  |  |  | EBWK - Global | 2006-07-29 |  | 0 | 0 |  |  | 02 | EM | EJ2 | 020 | EL | E | PS | E |  |  | E4B4 | E1 | X |  |  |  |  |
| EM020ELEN1 |  | 02 LV WIRING DIAGRAMS & CTL SCHEMATICS | 30d | 2006-10-20 A | 2007-02-28 | EM020ELEK2 FF+15d, EM20ELEK2 FF+15d | 23% | 23d | 2006-10-20 | 2006-11-30 | 512d | 0d | start on or after 2006-10-20 | 2007-02-28 | EBWK - Global | 2006-07-29 |  | 0 | 0 |  |  | 02 | EM | EN1 | 020 | EL | E |  | E |  |  | E4B4 |  | X |  |  |  |  |
| EM020ELEN2 |  | 02 MV WIRING DIAGRAMS & CTL SCHEMATICS | 30d | 2006-10-20 A | 2007-02-28 | EM020ELEK2 FF+15d, EM20ELEK2 FF+15d | 23% | 23d | 2006-10-20 | 2006-11-30 | 512d | 0d | start on or after 2006-10-20 | 2007-02-28 | EBWK - Global | 2006-07-29 |  | 0 | 0 |  |  | 02 | EM | EN2 | 020 | EL | E |  | E |  |  | E4B4 |  | X |  |  |  |  |
| EM020ELEN3 |  | 02 Equipment Interconnection Diagrams | 120d | 2007-01-02 A | 2007-03-01 | EK020ELEN3 SS, EK020EL000 FF+20d, PK02LMC23 FF | 80% | 24d | 2006-11-01 | 2007-04-17 | 511d | 0d |  | 2007-03-01 | EBWK - Global | 2006-07-29 |  | 0 | 0 |  |  | 02 | EM | EN3 | 020 | EL | E |  | E |  |  | E4B4 |  | X |  |  |  |  |

| ID | WBS | Activity | Duration | Start | Finish | Predecessors | Complete | Planned start | Planned finish | zData Date | Sequence | PCA Criticality Index | PCA Duration Sensitivity | User Defined Field 1 | User Definer Field 2 | EB02 - UNIT | EB01 - RESP | EB06 - WORK OP | EB03 - AREA | EB05 - DISCIPLINE | EB07 - REQN | EB04 - CLASS | EB00 - EPC | EB15 - Civil / U/G Path of Construction | EB16 - Piping Path of Construction | EB17 - Suffix | EB11 - FLAG | EB10 - KEY | EB09 - IPMS | EB08 - TAG | user_text1 |
| --- | --- | --- | --- | --- | --- | --- | --- | --- | --- | --- | --- | --- | --- | --- | --- | --- | --- | --- | --- | --- | --- | --- | --- | --- | --- | --- | --- | --- | --- | --- | --- |
|  | EV | **Environmental Engineering** |  |  |  |  |  |  |  |  |  |  |  |  |  |  |  |  |  |  |  |  |  |  |  |  |  |  |  |  |  |
|  | FP | **Fire Protection Engineering** |  |  |  |  |  |  |  |  |  |  |  |  |  |  |  |  |  |  |  |  |  |  |  |  |  |  |  |  |  |
|  | GE | **General Engineering (All Disciplines)** |  |  |  |  |  |  |  |  |  |  |  |  |  |  |  |  |  |  |  |  |  |  |  |  |  |  |  |  |  |
|  | IC | **Control Sytems Engineering** |  |  |  |  |  |  |  |  |  |  |  |  |  |  |  |  |  |  |  |  |  |  |  |  |  |  |  |  |  |
|  | MB | **Furnaces & Flares Engineering** |  |  |  |  |  |  |  |  |  |  |  |  |  |  |  |  |  |  |  |  |  |  |  |  |  |  |  |  |  |
|  | MC | **Exchangers Engineering** |  |  |  |  |  |  |  |  |  |  |  |  |  |  |  |  |  |  |  |  |  |  |  |  |  |  |  |  |  |
|  | MD | **Vessels Engineering** |  | 2006-01-04 | 2006-08-11 |  |  |  |  |  |  |  |  |  |  |  |  |  |  |  |  |  |  |  |  |  |  |  |  |  |  |
| EM02EMD228 |  | 02E Clips Release IFC (MD304, MD402, MD405) | 30d | 2006-01-04 A | 2006-04-21 A | EM02EPI120 | 100% | 2006-01-04 | 2006-02-14 | 2006-07-29 | 224 | 0 | 0 | 05A | MD224 | 02 | EM | MD2 | 02E | MD | P1080 | M | E | 16 | 18 | E4B4 |  |  |  |  |  |
| EM02KMD228 |  | 02K Clips Release IFC (MD202, MD405) | 30d | 2006-01-19 A | 2006-04-21 A | EM02KPI140 FF | 100% | 2006-01-19 | 2006-03-01 | 2006-07-29 | 224 | 0 | 0 | 05A | MD224 | 02 | EM | MD2 | 02K | MD | P1080 | M | E | 16 | 18 | E4B4 |  |  |  |  |  |
| EM02AMD228 |  | 02A Clips Release IFC (MD202, 103/4/5-E) | 30d | 2006-03-27 A | 2006-04-17 A | EM02API132 | 100% | 2006-03-27 | 2006-05-05 | 2006-07-29 | 224 | 0 | 0 | 05A | MD224 | 02 | EM | MD2 | 02A | MD | P1080 | M | E | 16 | 18 | E4B4 |  |  |  |  |  |
| EM02HMD228 |  | 02H Clips Release IFC (MD301, MD405, MD501) | 30d | 2006-03-27 A | 2006-04-17 A | EM02HPI132 | 100% | 2006-03-27 | 2006-05-05 | 2006-07-29 | 224 | 0 | 0 | 05A | MD224 | 02 | EM | MD2 | 02H | MD | P1080 | M | E | 16 | 18 | E4B4 |  |  |  |  |  |
| EM02JMD228 |  | 02J Clips Release IFC (MD302,MD304) | 30d | 2006-03-27 A | 2006-04-17 A | EM02JPI132 | 100% | 2006-03-27 | 2006-05-05 | 2006-07-29 | 224 | 0 | 0 | 05A | MD224 | 02 | EM | MD2 | 02J | MD | P1080 | M | E | 16 | 18 | E4B4 |  |  |  |  |  |
| EM02LMD228 |  | 02L Clips Release IFC (MD201, MD402, MD404, MD406) | 30d | 2006-03-27 A | 2006-04-26 A | EM02LPI132 | 100% | 2006-03-27 | 2006-05-05 | 2006-07-29 | 224 | 0 | 0 | 05A | MD224 | 02 | EM | MD2 | 02L | MD | P1080 | M | E | 16 | 18 | E4B4 |  |  |  |  |  |
| EM02MMD228 |  | 02M Clips Release IFC (MD303, MD402) | 30d | 2006-03-27 A | 2006-04-17 A | EM02MPI132 | 100% | 2006-03-27 | 2006-05-05 | 2006-07-29 | 224 | 0 | 0 | 05A | MD224 | 02 | EM | MD2 | 02M | MD | P1080 | M | E | 16 | 18 | E4B4 |  |  |  |  |  |
| EM02QMD228 |  | 02Q Clips Release IFC (MD401) | 30d | 2006-03-27 A | 2006-04-17 A | EM02QPI132 | 100% | 2006-03-27 | 2006-05-05 | 2006-07-29 | 224 | 0 | 0 | 05A | MD224 | 02 | EM | MD2 | 02Q | MD | P1080 | M | E | 16 | 18 | E4B4 |  |  |  |  |  |
| EM03CMD228 |  | 03C Clips Release IFC (MD411 2203-F, 2204-F) | 30d | 2006-04-03 A | 2006-04-26 A | EM03CPI132 | 100% | 2006-05-01 | 2006-06-09 | 2006-07-29 | 224 | 0 | 0 | 05A | MD224 | 02 | EM | MD2 | 03C | MD | P1080 | M | E | 16 | 18 | E5B5 |  |  |  |  |  |
| EM02DMD228 |  | 02D Clips Release IFC (MD403, MD404, 106/7/9-F) | 30d | 2006-04-03 A | 2006-04-17 A | EM02DPI132 | 100% | 2006-04-03 | 2006-05-12 | 2006-07-29 | 224 | 0 | 0 | 05A | MD224 | 02 | EM | MD2 | 02D | MD | P1080 | M | E | 16 | 18 | E4B4 |  |  |  |  |  |
| EM02DMD229 |  | 02D Vessel Steel Release IFC (MD403, MD404, 106/7/9-F) | 20d | 2006-04-12 A | 2006-05-29 A | EM02DMD228 | 100% | 2006-05-01 | 2006-05-26 | 2006-07-29 | 224 | 0 | 0 | 05A | MD224 | 02 | EM | MD2 | 02D | MD | P1080 | M | E | 16 | 18 | E4B4 |  |  |  |  |  |
| EM02EMD229 |  | 02E Vessel Steel Release IFC | 20d | 2006-04-12 A | 2006-05-29 A | EM02EMD228 | 100% | 2006-05-01 | 2006-05-26 | 2006-07-29 | 224 | 0 | 0 | 05A | MD224 | 02 | EM | MD2 | 02E | MD | P1080 | M | E | 16 | 18 | E4B4 |  |  |  |  |  |
| EM02HMD229 |  | 02H Vessel Steel Release IFC (MD301, MD405, MD501) | 20d | 2006-04-12 A | 2006-05-29 A | EM02HMD228 | 100% | 2006-05-01 | 2006-05-26 | 2006-07-29 | 224 | 0 | 0 | 05A | MD224 | 02 | EM | MD2 | 02H | MD | P1080 | M | E | 16 | 18 | E4B4 |  |  |  |  |  |
| EM02JMD229 |  | 02J Vessel Steel Release IFC (MD302,MD304) | 20d | 2006-04-12 A | 2006-05-29 A | EM02JMD228 | 100% | 2006-05-01 | 2006-05-26 | 2006-07-29 | 224 | 0 | 0 | 05A | MD224 | 02 | EM | MD2 | 02J | MD | P1080 | M | E | 16 | 18 | E4B4 |  |  |  |  |  |
| EM02LMD229 |  | 02L Vessel Steel Release IFC (MD201, MD402, MD404, MD406) | 20d | 2006-04-12 A | 2006-06-20 A | EM02LMD228 | 100% | 2006-05-01 | 2006-05-26 | 2006-07-29 | 224 | 0 | 0 | 05A | MD224 | 02 | EM | MD2 | 02L | MD | P1080 | M | E | 16 | 18 | E4B4 | PS |  |  |  |  |
| EM02MMD229 |  | 02M Vessel Steel Release IFC (MD303, MD402) | 20d | 2006-04-12 A | 2006-05-29 A | EM02MMD228 | 100% | 2006-05-01 | 2006-05-26 | 2006-07-29 | 224 | 0 | 0 |  |  | 02 | EM | MD2 | 02M | MD | P1080 | M | E | 23 | 19 | E1B1 |  | P16 | M |  |  |
| EM02QMD229 |  | 02Q Vessel Steel Release IFC (MD401) | 20d | 2006-04-12 A | 2006-05-29 A | EM02QMD228 | 100% | 2006-05-01 | 2006-05-26 | 2006-07-29 | 224 | 0 | 0 |  |  | 02 | EM | MD2 | 02Q | MD | P1080 | M | E | 23 | 19 | E1B1 |  | P16 | M |  |  |
| EM03FMD228 |  | 03F Clips Release IFC (MD411, 2006-F) | 30d | 2006-04-12 A | 2006-04-28 A | EM03FPI120 FF | 100% | 2006-06-06 | 2006-07-17 | 2006-07-29 | 224 | 0 | 0 | 05A | MD224 | 02 | EM | MD2 | 03F | MD | P1080 | M | E | 16 | 18 | E5B5 |  |  |  | 2006F |  |
| EM02AMD229 |  | 02A Vessel Steel Release IFC | 20d | 2006-04-12 A | 2006-05-29 A | EM02AMD228 FF+11d | 100% | 2006-04-12 | 2006-05-09 | 2006-07-29 | 224 | 0 | 0 | 05A | MD224 | 02 | EM | MD2 | 02A | MD | P1080 | M | E | 16 | 18 | E4B4 |  |  |  |  |  |
| EM02KMD229 |  | 02K Vessel Steel Release IFC (MD202, MD405) | 20d | 2006-04-12 A | 2006-05-29 A | EM02KMD228 | 100% | 2006-04-12 | 2006-05-09 | 2006-07-29 | 224 | 0 | 0 | 05A | MD224 | 02 | EM | MD2 | 02K | MD | P1080 | M | E | 16 | 18 | E4B4 |  |  |  |  |  |
| EM03BMD228 |  | 03B Clips Release IFC | 30d | 2006-07-03 A | 2006-08-11 A | EM03BPI132 SS | 100% | 2006-07-24 | 2006-09-01 | 2006-07-29 | 224 | 0 | 0 | 05A | MD224 | 02 | EM | MD2 | 03B | MD | P1080 | M | E | 16 | 18 | E5B5 | PS |  |  |  |  |
| EM05AMD228 |  | 05A Clips Release IFC | 30d | 2006-07-03 A | 2006-07-28 A | EK05AMD100 SS+15d | 100% | 2006-08-01 | 2006-09-12 | 2006-07-29 | 224 | 0 | 0 | 05A | MD224 | 02 | EM | MD2 | 05A | MD | P1080 | M | E | 16 | 18 | E5B5 | PS |  |  |  | Not KBR activity, to be done by DSD. |

| ID | WBS | Activity | Duration | Start | Finish | Predecessors | Complete | Planned start | Planned finish | Calendar | zData Date | Sequence | PCA Criticality Index | PCA Duration Sensitivity | User Defined Field 1 | User Definer Field 2 | EB02 - UNIT | EB01 - RESP | EB06 - WORK OP | EB03 - AREA | EB05 - DISCIPLINE | EB10 - KEY | EB04 - CLASS | EB00 - EPC | EB15 - Civil / U/G Path of Construction | EB16 - Piping Path of Construction | EB17 - Suffix | EB11 - FLAG | Optimistic Duration | Most Likely Duration | Pessimistic Duration | user_integer2 | user_text2 | EB12 - TEMP | EB19 - System | EB14 - RISK |
| --- | --- | --- | --- | --- | --- | --- | --- | --- | --- | --- | --- | --- | --- | --- | --- | --- | --- | --- | --- | --- | --- | --- | --- | --- | --- | --- | --- | --- | --- | --- | --- | --- | --- | --- | --- | --- |
|  | MJ | **Machinery Engineering** |  |  |  |  |  |  |  |  |  |  |  |  |  |  |  |  |  |  |  |  |  |  |  |  |  |  |  |  |  |  |  |  |  |  |
|  | PI | **Piping Engineering** |  | 2005-04-25 | 2007-02-02 |  |  |  |  |  |  |  |  |  |  |  |  |  |  |  |  |  |  |  |  |  |  |  |  |  |  |  |  |  |  |  |
| EM02JPI120 |  | 02J Plant Layout Model | 95d | 2005-04-25 A | 2005-12-13 A | EK020SY020, EM02JEL120 FF, EK02JPI030 SS, PK02JMC116 FF, EM000PI025 FF, EK02JPI031 FF | 100% | 2005-06-29 | 2005-11-10 | EBWK 5 Day MEC Holidays | 2006-07-29 | 120 | 0 | 0 | 02J | PI120 | 02 | EM | P20 | 02J | PI | P02 | P | E | 18 | 30 | E4B4 |  |  |  |  |  |  |  |  |  |
| EM02HPI120 |  | 02H Plant Layout Model | 120d | 2005-05-11 A | 2005-12-12 A | EM02HEL120 FF, EK02HPI030 FF, PK02HMC116 FF, EM000PI025 FF | 100% | 2005-07-29 | 2006-01-24 | EBWK 5 Day MEC Holidays | 2006-07-29 | 120 | 0 | 0 | 02H | PI120 | 02 | EM | P20 | 02H | PI | P02 | P | E | 11 | 20 | E4B4 | X |  |  |  |  |  |  |  |  |
| EM02EPI120 |  | 02E Plant Layout Model | 155d | 2005-05-16 A | 2005-12-12 A | EK020SY146 FF+10d, EK020IC210 SS, EM02EEL120 FF, EK02EPI030 FF, PK02EMC116 FF, EM000PI025 FF, EK000I1121 FF, EK000I1100 FF, EK000I1160 FF, EK000I1220 FF, EK000I1270 FF | 100% | 2005-07-20 | 2006-03-03 | EBWK 5 Day MEC Holidays | 2006-07-29 | 120 | 0 | 0 | 02E | PI120 | 02 | EM | P20 | 02E | PI | P02 | P | E | 32 | 15 | E4B4 | X |  |  |  |  |  |  |  |  |
| EM02KPI120 |  | 02K Plant Layout Model | 115d | 2005-05-16 A | 2005-12-14 A | EM02KEL120 FF, EK02KPI030, EM000PI025 FF, EK02KPI031 FF | 100% | 2005-08-04 | 2006-01-23 | EBWK 5 Day MEC Holidays | 2006-07-29 | 120 | 0 | 0 | 02K | PI120 | 02 | EM | P20 | 02K | PI | P02 | P | E | 19 | 17 | E4B4 | X |  |  |  |  |  |  |  |  |
| EM02QPI120 |  | 02Q Plant Layout Model | 105d | 2005-05-20 A | 2005-12-19 A | EM02QEL120 FF, EK02QPI030 FF, EM000PI025 FF | 100% | 2005-08-23 | 2006-01-26 | EBWK 5 Day MEC Holidays | 2006-07-29 | 120 | 0 | 0 | 02Q | PI120 | 02 | EM | P20 | 02Q | PI | P02 | P | E | 41 | 35 | E4B4 | X |  |  |  |  |  |  |  |  |
| EM02BPI120 |  | 02B Plant Layout Model | 90d | 2005-05-23 A | 2005-12-01 A | EK020IC210 SS, EM02BEL120 FF, EK02BPI030, EM000PI025 FF, PK02BML100 FF+10d | 100% | 2005-08-09 | 2005-12-15 | EBWK 5 Day MEC Holidays | 2006-07-29 | 120 | 0 | 0 | 02B | PI120 | 02 | EM | P20 | 02B | PI | P02 | P | E | 34 | 34 | E4B4 | X |  |  |  |  |  |  |  |  |
| EM02API120 |  | 02A Plant Layout Model | 90d | 2005-05-26 A | 2006-01-13 A | EK020SY020, EK020IC210 SS, EM02AEL120 FF, EK02API030, PK02AMC116 FF+5d, EM000PI025 FF, PK02AMJ154 FF+5d | 100% | 2005-08-04 | 2005-12-09 | EBWK 5 Day MEC Holidays | 2006-07-29 | 120 | 0 | 0 | 02A | PI120 | 02 | EM | P20 | 02A | PI | P02 | P | E | 36 | 25 | E4B4 | X |  |  |  |  |  |  |  |  |
| EM02NPI120 |  | 02N Plant Layout Model | 95d | 2005-06-03 A | 2005-12-14 A | EM02NEL120 FF, EK02NPI030 FF, PK02NMC116 FF+10d, EM000PI025 FF, PK020MC31F FF | 100% | 2005-09-27 | 2006-02-15 | EBWK 5 Day MEC Holidays | 2006-07-29 | 120 | 0 | 0 | 02N | PI120 | 02 | EM | P20 | 02N | PI | P02 | P | E | 39 | 37 | E4B4 | X |  |  |  |  |  |  |  |  |
| EM02DPI120 |  | 02D Plant Layout Model | 110d | 2005-06-06 A | 2006-01-16 A | EK020SY030, EK020SY145 FF+10d, EM02DEL120 FF, EK02DPI030, EK02DSY170 FF, PK02DMC116 FF, EM000PI025 FF, EK02DPI031 FF+10d | 100% | 2005-10-04 | 2006-03-15 | EBWK 5 Day MEC Holidays | 2006-07-29 | 120 | 0 | 0 | 02D | PI120 | 02 | EM | P20 | 02D | PI | P02 | P | E | 33 | 26 | E4B4 | X |  |  |  |  |  |  |  |  |
| EM02YPI121 |  | 02Y Plant Layout Model | 130d | 2005-06-06 A | 2005-12-13 A | EK020SY050 FF, EM02YEL120 FF, EK020PI010 SS, EK020SY020 FF | 100% | 2005-07-21 | 2006-01-30 | EBWK 5 Day MEC Holidays | 2006-07-29 | 120 | 0 | 0 | 02Y | PI120 | 02 | EM | P20 | 02Y | PI | P02 | P | E | 8 | 9 | E4B4 | X |  |  |  |  |  |  |  |  |
| EM02EPI123 |  | 02E Plant Layout Nozzle Release | 5d | 2005-06-27 A | 2005-10-21 A | EM02EPI120 SS, PK000MD42P FF | 100% | 2005-06-27 | 2005-07-01 | EBWK 5 Day MEC Holidays | 2006-07-29 | 123 | 0 | 0 | 02E | PI123 | 02 | EM | P20 | 02E | PI | P19 | P | E | 32 | 15 | E4B4 |  |  |  |  |  |  |  |  |  |
| EM02DPI123 |  | 02D Plant Layout Nozzle Release | 5d | 2005-07-06 A | 2005-10-25 A | EM02DPI120 SS+15d, PK000MD44P FF+15d | 100% | 2005-07-06 | 2005-07-12 | EBWK 5 Day MEC Holidays | 2006-07-29 | 123 | 0 | 0 | 02D | PI123 | 02 | EM | P20 | 02D | PI | P19 | P | E | 33 | 26 | E4B4 |  |  |  |  |  |  |  |  |  |
| EM02JPI123 |  | 02J Plant Layout Nozzle Release | 5d | 2005-07-07 A | 2005-10-21 A | EM02JPI120 SS, PK000MD34P FF, PK000MD32P FF | 100% | 2005-07-07 | 2005-07-13 | EBWK 5 Day MEC Holidays | 2006-07-29 | 123 | 0 | 0 | 02J | PI123 | 02 | EM | P20 | 02J | PI | P19 | P | E | 18 | 30 | E4B4 |  |  |  |  |  |  |  |  |  |
| EM02QPI123 |  | 02Q Plant Layout Nozzle Release | 5d | 2005-07-13 A | 2005-10-21 A | EM02QPI120 SS | 100% | 2005-07-13 | 2005-07-19 | EBWK 5 Day MEC Holidays | 2006-07-29 | 123 | 0 | 0 | 02Q | PI123 | 02 | EM | P20 | 02Q | PI | P19 | P | E | 41 | 35 | E4B4 |  |  |  |  |  |  |  |  |  |
| EM02KPI123 |  | 02K Plant Layout Nozzle Release | 5d | 2005-07-15 A | 2005-10-21 A | EM02KPI120 SS+30d, PK000MD22P FF+10d | 100% | 2005-07-15 | 2005-07-21 | EBWK 5 Day MEC Holidays | 2006-07-29 | 123 | 0 | 0 | 02K | PI123 | 02 | EM | P20 | 02K | PI | P19 | P | E | 19 | 17 | E4B4 |  |  |  |  |  |  |  |  |  |
| EM02NPI123 |  | 02N Plant Layout Nozzle Release | 5d | 2005-07-19 A | 2005-10-21 A | EM02NPI120 SS+20d | 100% | 2005-07-19 | 2005-07-25 | EBWK 5 Day MEC Holidays | 2006-07-29 | 123 | 0 | 0 | 02N | PI123 | 02 | EM | P20 | 02N | PI | P19 | P | E | 39 | 37 | E4B4 |  |  |  |  |  |  |  |  |  |
| EM02API123 |  | 02A Plant Layout Nozzle Release | 5d | 2005-07-20 A | 2005-10-21 A | EM02API120 SS+15d, PK000MD22P FF+10d | 100% | 2005-07-20 | 2005-07-26 | EBWK 5 Day MEC Holidays | 2006-07-29 | 123 | 0 | 0 | 02A | PI123 | 02 | EM | P20 | 02A | PI | P19 | P | E | 36 | 25 | E4B4 |  |  |  |  |  |  |  |  |  |
| EM02DPI100 |  | 02D Preliminary Drawings for Supersketch J-120,124 | 1d | 2005-07-25 A | 2005-08-01 A | EK020SY050 | 100% | 2005-08-12 | 2005-08-12 | EBWK 5 Day MEC Holidays | 2006-07-29 | 030 | 0 | 0 | 01B | PI030 | 02 | EM | P20 | 02D | PI | P00 | P | E | 33 | 26 | E2B2 | X |  |  |  |  |  |  |  |  |
| EM02MPI120 |  | 02M Plant Layout Model | 100d | 2005-08-02 A | 2006-01-18 A | EK020SY050 FF, EK020SY147 FF+10d, EM02MEL120 FF, EK02MPI030, EK02MSY170 FF+3d, PK02MMC116 FF+15d, EM000PI025 FF, PK020MC31F FF | 100% | 2005-08-01 | 2005-12-21 | EBWK 5 Day MEC Holidays | 2006-07-29 | 120 | 0 | 0 | 02M | PI120 | 02 | EM | P20 | 02M | PI | P02 | P | E | 24 | 28 | E4B4 |  |  |  |  |  |  |  |  |  |
| EM02HPI123 |  | 02H Plant Layout Nozzle Release | 56d | 2005-08-08 A | 2005-10-24 A | EM02HPI120 SS+30d | 100% | 2005-08-08 | 2005-10-25 | EBWK 5 Day MEC Holidays | 2006-07-29 | 123 | 0 | 0 | 02H | PI123 | 02 | EM | P20 | 02H | PI | P19 | P | E | 11 | 20 | E4B4 |  |  |  |  |  |  |  |  |  |
| EM02LPI120 |  | 02L Plant Layout Model | 46d | 2005-08-10 A | 2005-12-19 A | EK020SY050 FF, EK020SY145 FF, EM02LEL120 FF, EK02LPI030, PK02LMC116 FF, PK02LMJ154 FF, EM000PI025 FF | 100% | 2005-09-01 | 2005-11-07 | EBWK 5 Day MEC Holidays | 2006-07-29 | 120 | 0 | 0 |  |  | 02 | EM | P20 | 02L | PI | P02 | P | E | 23 | 19 | E4B4 |  |  |  |  |  |  |  |  |  |
| EM02CPI120 |  | 02C Plant Layout Model | 75d | 2005-08-15 A | 2005-12-16 A | EM02CEL120 FF, EK02CPI030, PK02CMJ156 FF, PK02CMJ154 FF, PK02CMJ135 FF, PK02CMC116 FF, EM000PI025 FF | 100% | 2005-08-19 | 2005-12-05 | EBWK 5 Day MEC Holidays | 2006-07-29 | 120 | 0 | 0 | 02C | PI120 | 02 | EM | P20 | 02C | PI | P02 | P | E | 14 | 21 | E4B4 |  |  |  |  |  |  |  |  |  |
| EM02GPI120 |  | 02G Plant Layout Model | 45d | 2005-09-05 A | 2006-05-16 A | EK020SY145 FF+10d, EM02GEL120 FF, EK02GPI030, PK02GMJ154 FF, PK02GMJ156 FF, PK02GML100 FF, PK02GMJ135 FF, EM000PI025 FF | 100% | 2005-09-19 | 2005-11-21 | EBWK 5 Day MEC Holidays | 2006-07-29 | 120 | 3.6 | 6 | 02G | PI120 | 02 | EM | P20 | 02G | PI | P02 | P | E | 9 | 22 | E4B4 |  | 12 | 13 | 15 |  |  |  |  |  |
| EM02MPI123 |  | 02M Plant Layout Nozzle Release | 35d | 2005-09-07 A | 2005-10-21 A | EM02MPI120 SS, PK000MD42P FF+10d | 100% | 2005-09-12 | 2005-10-31 | EBWK 5 Day MEC Holidays | 2006-07-29 | 123 | 0 | 0 | 02M | PI123 | 02 | EM | P20 | 02M | PI | P19 | P | E | 24 | 28 | E4B4 |  |  |  |  |  |  |  |  |  |
| EM02CPI123 |  | 02C Plant Layout Nozzle Release | 7d | 2005-09-26 A | 2005-10-21 A | EM02CPI120 SS | 100% | 2005-09-26 | 2005-10-04 | EBWK 5 Day MEC Holidays | 2006-07-29 | 123 | 0 | 0 | 02C | PI123 | 02 | EM | P20 | 02C | PI | P19 | P | E | 14 | 21 | E4B4 |  |  |  |  |  |  |  |  |  |
| EM02PPI120 |  | 02P Plant Layout Model | 60d | 2005-10-17 A | 2006-01-20 A | EK020SY050, EK020SY147 FF+10d, EM02PEL120 FF, EK02PPI030, EK02PSY170 FF+23d, EM000PI025 FF, PK02PMU100 FF+10d | 100% | 2005-10-17 | 2006-01-17 | EBWK 5 Day MEC Holidays | 2006-07-29 | 120 | 0 | 0 | 02P | PI120 | 02 | EM | P20 | 02P | PI | P02 | P | E | 40 | 36 | E4B4 |  |  |  |  |  |  |  |  |  |
| EK020PI013 |  | 020 Plot Plan - Issue IPL (ISBL) | 20d | 2005-10-31 A | 2006-02-23 A | EK020PI012 | 100% | 2006-03-27 | 2006-04-24 |  | 2006-07-29 |  | 0 | 0 |  |  | 02 | EM | P10 | 020 | PI | P17 | P | E |  |  | E4B4 |  |  |  |  |  |  |  |  |  |
| EM02FPI120 |  | 02F Plant Layout Model | 45d | 2005-10-31 A | 2005-12-14 A | EM02FEL120 FF, EK02FPI030, PK02FMJ154 FF, EM000PI025 FF | 100% | 2005-10-31 | 2006-01-10 | EBWK 5 Day MEC Holidays | 2006-07-29 | 120 | 0 | 0 | 02F | PI120 | 02 | EM | P20 | 02F | PI | P02 | P | E | 29 | 16 | E4B4 |  |  |  |  |  |  |  |  |  |
| EM02UPICBB |  | 02U IDP - Plant Layout - Benfield Sewer | 5d | 2005-11-01 A | 2005-11-11 A | EM02UPICBC | 100% | 2005-11-14 | 2005-11-18 | EBWK 5 Day MEC Holidays | 2006-07-29 |  | 0 | 0 |  |  | 02 | EM | U20 | 02U | PI | P05 | U | E | 1 | 1 | E1B1 |  |  |  |  | 16 | EK02UPICBB | X | CB |  |
| EM02UPICWB |  | 02U IDP - Plant Layout - Cooling Water | 5d | 2005-11-01 A | 2005-11-11 A | EM02UPICWC | 100% | 2005-11-21 | 2005-11-25 | EBWK 5 Day MEC Holidays | 2006-07-29 |  | 0 | 0 |  |  | 02 | EM | U20 | 02U | PI | P05 | U | E | 1 | 1 | E1B1 |  |  |  |  | 16 | EK02UPICBB | X | CW |  |
| EM02UPIFWB |  | 02U IDP - Plant Layout - Firewater | 5d | 2005-11-01 A | 2005-11-11 A | EM02UPICWC | 100% | 2005-11-21 | 2005-11-25 | EBWK 5 Day MEC Holidays | 2006-07-29 |  | 0 | 0 |  |  | 02 | EM | U20 | 02U | PI | P05 | U | E | 1 | 1 | E1B1 |  |  |  |  | 16 | EK02UPICBB | X | FW |  |
| EM02UPIOHB |  | 02U IDP - Plant Layout - Hot Outfall Sewer | 5d | 2005-11-01 A | 2005-11-11 A | EM02UPIOHC | 100% | 2005-11-21 | 2005-11-25 | EBWK 5 Day MEC Holidays | 2006-07-29 |  | 0 | 0 |  |  | 02 | EM | U20 | 02U | PI | P05 | U | E | 1 | 1 | E1B1 |  |  |  |  | 16 | EK02UPICBB | X | OH |  |
| EM02UPIOWB |  | 02U IDP - Plant Layout - Oily Water Sewer | 5d | 2005-11-01 A | 2005-11-11 A | EM02UPIOWC | 100% | 2005-11-21 | 2005-11-25 | EBWK 5 Day MEC Holidays | 2006-07-29 |  | 0 | 0 |  |  | 02 | EM | U20 | 02U | PI | P05 | U | E | 1 | 1 | E1B1 |  |  |  |  | 16 | EK02UPICBB | X | OW |  |
| EM02UPIPSB |  | 02U IDP - Plant Layout - Process Water Sewer | 5d | 2005-11-01 A | 2005-11-11 A | EM02UPIPSC | 100% | 2005-11-14 | 2005-11-18 | EBWK 5 Day MEC Holidays | 2006-07-29 |  | 0 | 0 |  |  | 02 | EM | U20 | 02U | PI | P05 | U | E | 1 | 1 | E1B1 |  |  |  |  | 16 | EK02UPICBB | X | PS |  |
| EM02LPI123 |  | 02L Plant Layout Nozzle Release | 6d | 2005-11-10 A | 2005-11-18 A | EM02LPI120 SS+30d, PK000MD21P FF+20d | 100% | 2005-11-08 | 2005-11-15 | EBWK 5 Day MEC Holidays | 2006-07-29 | 123 | 0 | 0 |  |  | 02 | EM | P20 | 02L | PI | P19 | P | E | 23 | 19 | E4B4 |  |  |  |  |  |  |  |  |  |
| EM02UPICBC |  | 02U Model Review Mtg (HOC/MEC) - Benfield Sewer | 5d | 2005-11-10 A | 2005-11-16 A | EK02UPICBA, EM000U000 SS | 100% | 2005-11-15 | 2005-11-21 | EBWK 5 Day MEC Holidays | 2006-07-29 |  | 0 | 0 |  |  | 02 | EM | U20 | 02U | PI | P03 | U | E | 1 | 1 | E1B1 |  |  |  |  | 5 | EK02UPICBC |  | CB |  |
| EM02UPIPSC |  | 02U Model Review Mtg (HOC/MEC) - Process Water Sewer | 5d | 2005-11-10 A | 2005-11-16 A | EK02UPIPSA, EM000U000 SS | 100% | 2005-11-15 | 2005-11-21 | EBWK 5 Day MEC Holidays | 2006-07-29 |  | 0 | 0 |  |  | 02 | EM | U20 | 02U | PI | P03 | U | E | 1 | 1 | E1B1 |  |  |  |  | 5 | EK02UPICBC |  | PS |  |
| EM02PPI123 |  | 02P Plant Layout Nozzle Release | 5d | 2005-11-14 A | 2005-11-18 A | EM02PPI120 SS+20d | 100% |  |  | EBWK 5 Day MEC Holidays | 2006-07-29 | 123 | 0 | 0 | 02P | PI123 | 02 | EM | P20 | 02P | PI | P19 | P | E | 40 | 36 | E4B4 |  |  |  |  |  |  |  |  |  |
| EK02UPIFWC |  | 02U Model Review Mtg (HOC/MEC) - Firewater | 5d | 2005-11-28 A | 2005-12-02 A | EK02UPIFWA, EM000U000 SS, EM020ELEL2 FF | 100% | 2005-11-14 | 2005-11-18 |  | 2006-07-29 |  | 0 | 0 |  |  | 02 | EM | U20 | 02U | PI | P03 | U | E | 1 | 1 | E1B1 |  |  |  |  | 5 | EK02UPICBC |  | FW |  |
| EM02UPICWC |  | 02U Model Review Mtg (HOC/MEC) - Cooling Water | 5d | 2005-11-28 A | 2005-12-02 A | EK02UPICWA, EM000U000 SS | 100% | 2005-11-14 | 2005-11-18 | EBWK 5 Day MEC Holidays | 2006-07-29 |  | 0 | 0 |  |  | 02 | EM | U20 | 02U | PI | P03 | U | E | 1 | 1 | E1B1 |  |  |  |  | 5 | EK02UPICBC |  | CW |  |
| EM02UPIOHC |  | 02U Model Review Mtg (HOC/MEC) - Hot Outfall Sewer | 5d | 2005-11-28 A | 2005-12-01 A | EK02UPIOHA, EM000U000 SS | 100% | 2005-11-14 | 2005-11-18 | EBWK 5 Day MEC Holidays | 2006-07-29 |  | 0 | 0 |  |  | 02 | EM | U20 | 02U | PI | P03 | U | E | 1 | 1 | E1B1 |  |  |  |  | 5 | EK02UPICBC |  | OH |  |
| EM02FPI123 |  | 02F Plant Layout Nozzle Release | 5d | 2005-11-28 A | 2005-12-02 A | EM02FPI120 SS+20d | 100% |  |  | EBWK 5 Day MEC Holidays | 2006-07-29 | 123 | 0 | 0 | 02F | PI123 | 02 | EM | P20 | 02F | PI | P19 | P | E | 29 | 16 | E4B4 |  |  |  |  |  |  |  |  |  |
| EM02UPIOWC |  | 02U Model Review Mtg (HOC/MEC) - Oily Water Sewer | 5d | 2005-11-28 A | 2005-12-01 A | EK02UPIOWA, EM000U000 SS | 100% | 2005-11-28 | 2005-12-02 | EBWK 5 Day MEC Holidays | 2006-07-29 |  | 0 | 0 |  |  | 02 | EM | U20 | 02U | PI | P03 | U | E | 1 | 1 | E1B1 |  |  |  |  | 5 | EK02UPICBC |  | OW |  |
| EM02UPICBD |  | 02U Planning Release - Benfield Sewer | 5d | 2005-12-08 A | 2006-01-09 A | EM02UPICBB | 100% | 2005-12-13 | 2005-12-19 | EBWK 5 Day MEC Holidays | 2006-07-29 |  | 0 | 0 |  |  | 02 | EM | U20 | 02U | PI | P07 | U | E | 1 | 1 | E4B4 | PS |  |  |  | 5 | EK02UPICBD |  | CB |  |
| EM02UPICWD |  | 02U Planning Release - Cooling Water | 5d | 2005-12-08 A | 2006-01-09 A | EM02UPICWB | 100% | 2005-12-13 | 2005-12-19 | EBWK 5 Day MEC Holidays | 2006-07-29 |  | 0 | 0 |  |  | 02 | EM | U20 | 02U | PI | P07 | U | E | 1 | 1 | E4B4 | PS |  |  |  | 5 | EK02UPICBD |  | CW |  |
| EM02UPIFWD |  | 02U Planning Release - Firewater | 5d | 2005-12-08 A | 2006-01-09 A | EM02UPIFWB | 100% | 2005-12-13 | 2005-12-19 | EBWK 5 Day MEC Holidays | 2006-07-29 |  | 0 | 0 |  |  | 02 | EM | U20 | 02U | PI | P07 | U | E | 1 | 1 | E4B4 | PS |  |  |  | 5 | EK02UPICBD |  | FW |  |
| EM02UPIOHD |  | 02U Planning Release - Hot Outfall Sewer | 5d | 2005-12-08 A | 2006-01-09 A | EM02UPIOHC, EM02UPIOHB | 100% | 2005-12-13 | 2005-12-19 | EBWK 5 Day MEC Holidays | 2006-07-29 |  | 0 | 0 |  |  | 02 | EM | U20 | 02U | PI | P07 | U | E | 1 | 1 | E4B4 | PS |  |  |  | 5 | EK02UPICBD |  | OH |  |
| EM02UPIPSD |  | 02U Planning Release - Process Water Sewer | 5d | 2005-12-08 A | 2006-01-09 A | EM02UPIPSB | 100% | 2005-12-13 | 2005-12-19 | EBWK 5 Day MEC Holidays | 2006-07-29 |  | 0 | 0 |  |  | 02 | EM | U20 | 02U | PI | P07 | U | E | 1 | 1 | E4B4 | PS |  |  |  | 5 | EK02UPICBD |  | PS |  |
| EM02UPIOWD |  | 02U Planning Release - Oily Water Sewer | 5d | 2005-12-08 A | 2006-01-09 A | EM02UPIOWB | 100% | 2005-12-08 | 2005-12-15 | EBWK 5 Day MEC Holidays | 2006-07-29 |  | 0 | 0 |  |  | 02 | EM | U20 | 02U | PI | P07 | U | E | 1 | 1 | E4B4 | PS |  |  |  | 5 | EK02UPICBD |  | OW |  |
| EM02BPI130 |  | 02B Model Review Mtg | 1d | 2005-12-12 A | 2005-12-12 A | EK020PI011, EM02BPI120 | 100% | 2005-12-13 | 2005-12-13 | EBWK 5 Day MEC Holidays | 2006-07-29 | 130 | 0 | 0 | 02B | PI130 | 02 | EM | P20 | 02B | PI | P03 | P | E | 34 | 34 | E4B4 |  |  |  |  |  |  |  |  |  |
| EM02EPI130 |  | 02E Model Review Mtg | 2d | 2005-12-13 A | 2005-12-14 A | EK020PI011, EM02EPI120 SS, EM02EPI123 FF | 100% |  |  | EBWK 5 Day MEC Holidays | 2006-07-29 | 130 | 0 | 0 | 02E | PI130 | 02 | EM | P20 | 02E | PI | P03 | P | E | 32 | 15 | E4B4 |  |  |  |  |  |  |  |  |  |
| EM02EPI140 |  | 02E Model Review Comment Resolution | 3d | 2005-12-15 A | 2005-12-19 A | EM02EPI130 | 100% | 2006-01-30 | 2006-02-01 | EBWK 5 Day MEC Holidays | 2006-07-29 | 132 | 0 | 0 | 01A | PI132 | 02 | EM | P20 | 02E | PI | P04 | P | E | 32 | 15 | E4B4 |  |  |  |  |  |  |  |  |  |
| EM02HPI130 |  | 02H Model Review Mtg | 7d | 2005-12-15 A | 2005-12-19 A | EK020PI011, EM02HPI120, EM02HPI123 FF | 100% | 2005-12-13 | 2005-12-21 | EBWK 5 Day MEC Holidays | 2006-07-29 | 130 | 0 | 0 | 02H | PI130 | 02 | EM | P20 | 02H | PI | P03 | P | E | 11 | 20 | E4B4 |  |  |  |  |  |  |  |  |  |
| EM02EPI133 |  | 02E IDP - Plant Layout | 2d | 2005-12-20 A | 2005-12-23 A | EM02EPI140 | 100% | 2006-02-02 | 2006-02-03 | EBWK 5 Day MEC Holidays | 2006-07-29 | 132 | 0 | 0 | 01A | PI132 | 02 | EM | P20 | 02E | PI | P05 | P | E | 32 | 15 | E4B4 |  |  |  |  |  |  |  |  |  |
| EM02JPI130 |  | 02J Model Review Mtg | 2d | 2005-12-20 A | 2005-12-20 A | EK020PI011, EM02JPI120, EM02JPI123 FF | 100% | 2006-01-03 | 2006-01-04 | EBWK 5 Day MEC Holidays | 2006-07-29 | 130 | 0 | 0 | 02J | PI130 | 02 | EM | P20 | 02J | PI | P03 | P | E | 18 | 30 | E4B4 |  |  |  |  |  |  |  |  |  |
| EM02KPI130 |  | 02K Model Review Mtg | 2d | 2005-12-21 A | 2005-12-21 A | EK020PI011, EM02KPI120 | 100% | 2005-12-22 | 2005-12-23 | EBWK 5 Day MEC Holidays | 2006-07-29 | 130 | 0 | 0 | 02K | PI130 | 02 | EM | P20 | 02K | PI | P03 | P | E | 19 | 17 | E4B4 |  |  |  |  |  |  |  |  |  |
| EM02LPI130 |  | 02L Model Review Mtg | 5d | 2005-12-22 A | 2006-01-04 A | EK020PI011, EM02LPI120, EM02LPI123 FF | 100% | 2006-01-04 | 2006-01-10 | EBWK 5 Day MEC Holidays | 2006-07-29 | 130 | 0 | 0 |  |  | 02 | EM | P20 | 02L | PI | P03 | P | E | 23 | 19 | E4B4 |  |  |  |  |  |  |  |  |  |
| EM02HPI133 |  | 02H IDP - Plant Layout | 2d | 2006-01-02 A | 2006-01-06 A | EK02HPI021 | 100% | 2006-02-02 | 2006-02-03 | EBWK 5 Day MEC Holidays | 2006-07-29 | 132 | 0 | 0 | 01A | PI132 | 02 | EM | P20 | 02H | PI | P05 | P | E | 11 | 20 | E4B4 |  |  |  |  |  |  |  |  |  |
| EM02CPI130 |  | 02C Model Review Mtg | 3d | 2006-01-05 A | 2006-01-06 A | EK020PI011, EM02CPI120, EM02CPI123 FF | 100% | 2006-02-06 | 2006-02-09 | EBWK 5 Day MEC Holidays | 2006-07-29 | 130 | 0 | 0 | 02C | PI130 | 02 | EM | P20 | 02C | PI | P03 | P | E | 14 | 21 | E4B4 |  |  |  |  |  |  |  |  |  |
| EM02KPI140 |  | 02K Model Review Comment Resolution | 3d | 2006-01-09 A | 2006-01-11 A | EM02KCV160 FF, EM02KPI120 FF+10d, EM02KPI120 F1+5d, EM02KPI130 | 100% | 2006-02-27 | 2006-03-01 | EBWK 5 Day MEC Holidays | 2006-07-29 | 132 | 0 | 0 | 02K | PI132 | 02 | EM | P20 | 02K | PI | P04 | P | E | 19 | 17 | E4B4 |  |  |  |  |  |  |  |  |  |
| EM02MPI130 |  | 02M Model Review Mtg | 3d | 2006-01-09 A | 2006-01-11 A | EK020PI011 | 100% | 2006-01-16 | 2006-01-18 | EBWK 5 Day MEC Holidays | 2006-07-29 | 130 | 0 | 0 | 02M | PI130 | 02 | EM | P20 | 02M | PI | P03 | P | E | 24 | 28 | E4B4 |  |  |  |  |  |  |  |  |  |
| EM02UPI190 |  | 02U Detail Model Development - All Services | 25d | 2006-01-09 A | 2006-03-10 A | EK02UIC300 FF+10d, EM02UPICBD, EM02UPIOWD, EM02UPIPSD, EM02UPIFWD, EM02UPIOHD, EM02UPICWD | 100% | 2006-01-09 | 2006-02-10 | EBWK 5 Day MEC Holidays | 2006-07-29 |  | 0 | 0 |  |  | 02 | EM | U20 | 02U | PI | P08 | U | E | 1 | 1 | E4B4 |  |  |  |  | 50 |  |  | 02U | 17 |
| EM02DPI130 |  | 02D Model Review Mtg | 2d | 2006-01-12 A | 2006-01-13 A | EK020PI011, EM02DPI123 | 100% | 2006-01-17 | 2006-01-18 | EBWK 5 Day MEC Holidays | 2006-07-29 | 130 | 0 | 0 | 02D | PI130 | 02 | EM | P20 | 02D | PI | P03 | P | E | 33 | 26 | E4B4 |  |  |  |  |  |  |  |  |  |
| EM02KPI133 |  | 02K IDP - Plant Layout | 2d | 2006-01-12 A | 2006-01-13 A | PK02KML100, EM02KPI140 | 100% | 2006-03-02 | 2006-03-03 | EBWK 5 Day MEC Holidays | 2006-07-29 | 132 | 0 | 0 | 01A | PI132 | 02 | EM | P20 | 02K | PI | P05 | P | E | 19 | 17 | E4B4 |  |  |  |  |  |  |  |  |  |
| EM02MPI140 |  | 02M Model Review Comment Resolution | 3d | 2006-01-12 A | 2006-01-16 A | EM02MPI130 | 100% | 2006-02-27 | 2006-03-01 | EBWK 5 Day MEC Holidays | 2006-07-29 | 130 | 0 | 0 | 02M | PI130 | 02 | EM | P20 | 02M | PI | P04 | P | E | 24 | 28 | E4B4 |  |  |  |  |  |  |  |  |  |
| EM02FPI130 |  | 02F Model Review Mtg | 3d | 2006-01-12 A | 2006-01-16 A | EK020PI011, EM02FPI120, EM02FPI123 FF | 100% |  |  | EBWK 5 Day MEC Holidays | 2006-07-29 | 130 | 0 | 0 | 02F | PI130 | 02 | EM | P20 | 02F | PI | P03 | P | E | 29 | 16 | E4B4 |  |  |  |  |  |  |  |  |  |
| EM02DPI140 |  | 02D Model Review Comment Resolution | 3d | 2006-01-16 A | 2006-01-17 A | EM02DPI130 | 100% | 2006-01-30 | 2006-02-01 | EBWK 5 Day MEC Holidays | 2006-07-29 | 132 | 0 | 0 | 02D | PI132 | 02 | EM | P20 | 02D | PI | P04 | P | E | 33 | 26 | E4B4 |  |  |  |  |  |  |  |  |  |
| EM02NPI130 |  | 02N Model Review Mtg | 2d | 2006-01-16 A | 2006-01-17 A | EK020PI011, EM02NPI120, EM02NPI123 FF | 100% | 2006-01-25 | 2006-01-26 | EBWK 5 Day MEC Holidays | 2006-07-29 | 130 | 0 | 0 | 02N | PI130 | 02 | EM | P20 | 02N | PI | P03 | P | E | 39 | 37 | E4B4 |  |  |  |  |  |  |  |  |  |

Notes:
- EM02EPI120: Current Status: Monterray is complete 6-3-05; needs / exchanger seeting plans to finalize planning
- EM02GPI120: user_text1: Interstage cooler nozzle locations,Cooling Water Header Info from Vendor,Will Issue with Hold,Barier Design chg Piping Arrangement

| ID | Activity | Duration | Start | Finish | Predecessors | Complete | Planned start | Planned finish | Calendar | zData Date | Sequence | PCA Criticality Index | PCA Duration Sensitivity | User Defined Field 1 | User Definer Field 2 | EB02 - UNIT | EB01 - RESP | EB06 - WORK OP | EB03 - AREA | EB05 - DISCIPLINE | EB10 - KEY | EB04 - CLASS | EB00 - EPC | EB15 - Civil / U/G Path of Construction | EB16 - Piping Path of Construction | EB17 - Suffix | EB11 - FLAG | user_text1 | user_integer2 | EB14 - RISK | Optimistic Duration | Most Likely Duration | Pessimistic Duration | user_text2 | EB19 - System |
| --- | --- | --- | --- | --- | --- | --- | --- | --- | --- | --- | --- | --- | --- | --- | --- | --- | --- | --- | --- | --- | --- | --- | --- | --- | --- | --- | --- | --- | --- | --- | --- | --- | --- | --- | --- |
| EM02PPI130 | 02P Model Review Mtg | 1d | 2006-01-16 A | 2006-01-16 A | EK020PI011, EM02PPI120, EM02PPI123 FF | 100% | 2006-01-23 | 2006-01-23 | EBWK 5 Day MEC Holidays | 2006-07-29 | 130 | 0 | 0 | 02P | PI130 | 02 | EM | P20 | 02P | PI | P03 | P | E | 40 | 36 | E4B4 |  |  |  |  |  |  |  |  |  |
| EM02FPI140 | 02F Model Review Comment Resolution | 3d | 2006-01-17 A | 2006-01-25 A | EM02FPI130 | 100% | 2006-01-30 | 2006-02-01 | EBWK 5 Day MEC Holidays | 2006-07-29 | 130 | 0 | 0 | 02F | PI130 | 02 | EM | P20 | 02F | PI | P04 | P | E | 29 | 16 | E4B4 |  |  |  |  |  |  |  |  |  |
| EM02MPI133 | 02M IDP - Plant Layout | 2d | 2006-01-17 A | 2006-01-18 A | EM02MPI140 | 100% | 2006-02-27 | 2006-02-28 | EBWK 5 Day MEC Holidays | 2006-07-29 | 132 | 0 | 0 | 01A | PI132 | 02 | EM | P20 | 02M | PI | P05 | P | E | 24 | 28 | E4B4 |  |  |  |  |  |  |  |  |  |
| EM02QPI130 | 02Q Model Review Mtg | 1d | 2006-01-17 A | 2006-01-17 A | EK020PI011, EM02QPI120, EM02QPI123 FF | 100% | 2006-01-24 | 2006-01-24 | EBWK 5 Day MEC Holidays | 2006-07-29 | 130 | 0 | 0 | 02Q | PI130 | 02 | EM | P20 | 02Q | PI | P03 | P | E | 41 | 35 | E4B4 |  |  |  |  |  |  |  |  |  |
| EM02API130 | 02A Model Review Mtg | 1d | 2006-01-18 A | 2006-01-18 A | EK020PI011, EM02API120 FF, EM02API123 FF | 100% | 2006-01-20 | 2006-01-20 | EBWK 5 Day MEC Holidays | 2006-07-29 | 130 | 0 | 0 | 02A | PI130 | 02 | EM | P20 | 02A | PI | P03 | P | E | 36 | 25 | E4B4 |  |  |  |  |  |  |  |  |  |
| EM02API141 | 02A Model Review Comment Resolution | 3d | 2006-01-18 A | 2006-01-25 A | EM02API130 | 100% | 2006-01-30 | 2006-02-01 | EBWK 5 Day MEC Holidays | 2006-07-29 | 130 | 0 | 0 | 02A | PI130 | 02 | EM | P20 | 02A | PI | P04 | P | E | 36 | 25 | E4B4 |  |  |  |  |  |  |  |  |  |
| EM02DPI133 | 02D IDP - Plant Layout | 2d | 2006-01-18 A | 2006-01-20 A | EM02DPI140 | 100% | 2006-02-02 | 2006-02-03 | EBWK 5 Day MEC Holidays | 2006-07-29 | 132 | 0 | 0 | 01A | PI132 | 02 | EM | P20 | 02D | PI | P05 | P | E | 33 | 26 | E4B4 |  |  |  |  |  |  |  |  |  |
| EM02QPI141 | 02Q Model Review Comment Resolution | 3d | 2006-01-18 A | 2006-01-20 A | EM02QPI130 | 100% | 2006-02-27 | 2006-03-01 | EBWK 5 Day MEC Holidays | 2006-07-29 | 130 | 0 | 0 | 02Q | PI130 | 02 | EM | P20 | 02Q | PI | P04 | P | E | 41 | 35 | E4B4 |  |  |  |  |  |  |  |  |  |
| EM02YPI122 | 02Y Model Review Mtg | 6d | 2006-01-19 A | 2006-01-23 A | EK020PI011, EM02YPI121 | 100% | 2006-01-30 | 2006-02-06 | EBWK 5 Day MEC Holidays | 2006-07-29 | 130 | 0 | 0 | 02Y | PI130 | 02 | EM | P20 | 02Y | PI | P03 | P | E | 8 | 9 | E4B4 |  |  |  |  |  |  |  |  |  |
| EM02KPI051 | 02K Planning Release | 5d | 2006-01-20 A | 2006-01-25 A | EK02KPI050 | 100% | 2006-02-27 | 2006-03-03 |  | 2006-07-29 | 050 | 0 | 0 | 02K | PI050 | 02 | EM | P20 | 02K | PI | P07 | P | E | 19 | 17 | E1B1 | PS |  |  |  |  |  |  |  |  |
| EM02QPI133 | 02Q IDP - Plant Layout | 2d | 2006-01-23 A | 2006-01-27 A | EM02QPI141 | 100% | 2006-03-02 | 2006-03-03 | EBWK 5 Day MEC Holidays | 2006-07-29 | 132 | 0 | 0 | 01A | PI132 | 02 | EM | P20 | 02Q | PI | P05 | P | E | 41 | 35 | E4B4 |  |  |  |  |  |  |  |  |  |
| EM02PPI141 | 02P Model Review Comment Resolution | 4d | 2006-01-23 A | 2006-01-26 A | EM02PPI130 | 100% |  |  | EBWK 5 Day MEC Holidays | 2006-07-29 | 130 | 0 | 0 | 02P | PI130 | 02 | EM | P20 | 02P | PI | P04 | P | E | 40 | 36 | E4B4 |  |  |  |  |  |  |  |  |  |
| EM02YPI123 | 02Y Model Review Comment Resolution | 4d | 2006-01-24 A | 2006-01-27 A | EM02YPI122 | 100% | 2006-02-27 | 2006-03-02 | EBWK 5 Day MEC Holidays | 2006-07-29 | 130 | 0 | 0 | 02Y | PI130 | 02 | EM | P20 | 02Y | PI | P04 | P | E | 8 | 9 | E4B4 |  |  |  |  |  |  |  |  |  |
| EM02API133 | 02A IDP - Plant Layout | 2d | 2006-01-26 A | 2006-01-27 A | EM02API141 | 100% | 2006-02-02 | 2006-02-03 | EBWK 5 Day MEC Holidays | 2006-07-29 | 132 | 0 | 0 | 01A | PI132 | 02 | EM | P20 | 02A | PI | P05 | P | E | 36 | 25 | E4B4 |  |  |  |  |  |  |  |  |  |
| EM02FPI133 | 02F IDP - Plant Layout | 2d | 2006-01-26 A | 2006-01-27 A | EM02FPI140 | 100% | 2006-02-02 | 2006-02-03 | EBWK 5 Day MEC Holidays | 2006-07-29 | 132 | 0 | 0 | 01A | PI132 | 02 | EM | P20 | 02F | PI | P05 | P | E | 29 | 16 | E4B4 |  |  |  |  |  |  |  |  |  |
| EM02LPI140 | 02L Model Review Comment Resolution | 3d | 2006-01-27 A | 2006-02-01 A | EM02LPI130 | 100% | 2006-02-27 | 2006-03-01 | EBWK 5 Day MEC Holidays | 2006-07-29 | 130 | 0 | 0 |  |  | 02 | EM | P20 | 02L | PI | P04 | P | E | 23 | 19 | E4B4 |  |  |  |  |  |  |  |  |  |
| EM02NPI141 | 02N Model Review Comment Resolution | 3d | 2006-01-27 A | 2006-01-31 A | EM02NPI130 | 100% | 2006-02-27 | 2006-03-01 | EBWK 5 Day MEC Holidays | 2006-07-29 | 130 | 0 | 0 | 02N | PI130 | 02 | EM | P20 | 02N | PI | P04 | P | E | 39 | 37 | E4B4 |  |  |  |  |  |  |  |  |  |
| EM02PPI133 | 02P IDP - Plant Layout | 2d | 2006-01-27 A | 2006-01-31 A | EM02PPI141 | 100% | 2006-03-03 | 2006-03-06 | EBWK 5 Day MEC Holidays | 2006-07-29 | 132 | 0 | 0 | 01A | PI132 | 02 | EM | P20 | 02P | PI | P05 | P | E | 40 | 36 | E4B4 |  |  |  |  |  |  |  |  |  |
| EM02YPI124 | 02Y IDP - Plant Layout | 2d | 2006-01-30 A | 2006-01-31 A | EM02YPI123 | 100% | 2006-02-27 | 2006-02-28 | EBWK 5 Day MEC Holidays | 2006-07-29 | 132 | 0 | 0 | 01A | PI132 | 02 | EM | P20 | 02Y | PI | P05 | P | E | 8 | 9 | E4B4 |  |  |  |  |  |  |  |  |  |
| EM02BPI141 | 02B Model Review Comment Resolution | 3d | 2006-01-30 A | 2006-01-31 A | EM02BPI130 | 100% | 2006-01-30 | 2006-02-01 | EBWK 5 Day MEC Holidays | 2006-07-29 | 130 | 0 | 0 | 02B | PI130 | 02 | EM | P20 | 02B | PI | P04 | P | E | 34 | 34 | E4B4 |  |  |  |  |  |  |  |  |  |
| EK02YPI050 | 02Y Model Comment Resolution Approval | 3d | 2006-02-01 A | 2006-02-03 A | EM02YPI124 | 100% | 2006-03-01 | 2006-03-03 |  | 2006-07-29 | 130 | 0 | 0 | 02Y | PI130 | 02 | EM | P20 | 02Y | PI | P06 | P | E | 8 | 9 | E4B4 |  |  |  |  |  |  |  |  |  |
| EM02BPI133 | 02B IDP - Plant Layout | 2d | 2006-02-01 A | 2006-02-02 A | EM02BPI141 | 100% |  |  | EBWK 5 Day MEC Holidays | 2006-07-29 | 132 | 0 | 0 | 01A | PI132 | 02 | EM | P20 | 02B | PI | P05 | P | E | 34 | 34 | E4B4 |  |  |  |  |  |  |  |  |  |
| EM02JPI021 | 02J Model Review Comment Resolution | 3d | 2006-02-01 A | 2006-02-03 A | EM02JPI130 | 100% |  |  |  | 2006-07-29 |  | 0 | 0 |  |  | 02 | EM | P50 | 02J | PI | P04 | P | E |  |  |  |  |  |  |  |  |  |  |  |  |
| EM02NPI133 | 02N IDP - Plant Layout | 2d | 2006-02-01 A | 2006-02-02 A | EM02NPI141 | 100% |  |  | EBWK 5 Day MEC Holidays | 2006-07-29 | 132 | 0 | 0 | 01A | PI132 | 02 | EM | P20 | 02N | PI | P05 | P | E | 39 | 37 | E4B4 |  |  |  |  |  |  |  |  |  |
| EM02LPI133 | 02L IDP - Plant Layout | 2d | 2006-02-02 A | 2006-02-06 A | EM02LPI140 | 100% | 2006-02-27 | 2006-02-28 | EBWK 5 Day MEC Holidays | 2006-07-29 | 132 | 0 | 0 | 01A | PI132 | 02 | EM | P20 | 02L | PI | P05 | P | E | 23 | 19 | E4B4 |  |  |  |  |  |  |  |  |  |
| EM02JPI133 | 02J IDP - Plant Layout | 2d | 2006-02-06 A | 2006-02-08 A | EM02JPI021 | 100% | 2006-02-27 | 2006-02-28 | EBWK 5 Day MEC Holidays | 2006-07-29 | 132 | 0 | 0 | 01A | PI132 | 02 | EM | P20 | 02J | PI | P05 | P | E | 18 | 30 | E4B4 |  |  |  |  |  |  |  |  |  |
| EM02YPI132 | 02Y Planning Release | 1d | 2006-02-06 A | 2006-02-10 A | EM02YCV120 FF, EM02YCV130 FF, EK02YPI050 | 100% | 2006-03-06 | 2006-03-06 | EBWK 5 Day MEC Holidays | 2006-07-29 | 132 | 0 | 0 | 02Y | PI132 | 02 | EM | P20 | 02Y | PI | P07 | P | E | 8 | 9 | E4B4 | PS |  |  |  |  |  |  |  |  |
| EM02BPI132 | 02B Planning Release | 1d | 2006-02-08 A | 2006-02-08 A | EM02BCV160 FF, EK02BPI050 | 100% |  |  | EBWK 5 Day MEC Holidays | 2006-07-29 | 132 | 0 | 0 | 02B | PI132 | 02 | EM | P20 | 02B | PI | P07 | P | E | 34 | 34 | E4B4 | PS |  |  |  |  |  |  |  |  |
| EM02QPI132 | 02Q Planning Release | 5d | 2006-02-09 A | 2006-02-15 A | EK02QPI050 | 100% | 2006-03-09 | 2006-03-15 | EBWK 5 Day MEC Holidays | 2006-07-29 | 132 | 0 | 0 | 02Q | PI132 | 02 | EM | P20 | 02Q | PI | P07 | P | E | 41 | 35 | E4B4 | PS |  |  |  |  |  |  |  |  |
| EM02API132 | 02A Planning Release | 1d | 2006-02-09 A | 2006-02-09 A | EM02ACV120 FF, EM02ACV125 FF, EM02ACV160 FF, EK02API050 SS | 100% |  |  | EBWK 5 Day MEC Holidays | 2006-07-29 | 132 | 0 | 0 | 02A | PI132 | 02 | EM | P20 | 02A | PI | P07 | P | E | 36 | 25 | E4B4 | PS |  |  |  |  |  |  |  |  |
| EM02PPI132 | 02P Planning Release | 1d | 2006-02-10 A | 2006-02-10 A | EK02PPI050 | 100% | 2006-03-10 | 2006-03-10 | EBWK 5 Day MEC Holidays | 2006-07-29 | 132 | 0 | 0 | 02P | PI132 | 02 | EM | P20 | 02P | PI | P07 | P | E | 40 | 36 | E4B4 | PS |  |  |  |  |  |  |  |  |
| EM02JPI132 | 02J Planning Release | 1d | 2006-02-13 A | 2006-02-15 A | EM02JCV120 FF, EM02JCV125 FF, EM02JCV160 FF, EK02JPI050, EM02JPI133 | 100% | 2006-03-03 | 2006-03-03 | EBWK 5 Day MEC Holidays | 2006-07-29 | 132 | 0 | 0 | 02J | PI132 | 02 | EM | P20 | 02J | PI | P07 | P | E | 18 | 30 | E4B4 | PS |  |  |  |  |  |  |  |  |
| EM02JPI134 | 02J Detail Model Development | 50d | 2006-02-15 A | 2006-06-12 A | EM02JPI132, EK02JIC300 SS, PK000MD34N FF+10d, PK02JMD03, PK02JMD04, PK02JMD05, PK02JMD06, ZZ1590 FF+4d, ZZ1850 FF+4d | 100% | 2006-03-03 | 2006-05-17 | EBWK 5 Day MEC Holidays | 2006-07-29 | 134 | 0 | 0 | 02J | PI134 | 02 | EM | P50 | 02J | PI | P08 | P | E | 18 | 30 | E4B4 |  |  |  |  |  |  |  |  |  |
| EM02QPI134 | 02Q Detail Model Development | 20d | 2006-02-16 A | 2006-05-26 A | EM02QPI132, EK02QIC300 FF+3d, PK000MD41N FF+10d, PK02QMD07 | 100% | 2006-03-16 | 2006-04-17 | EBWK 5 Day MEC Holidays | 2006-07-29 | 134 | 0 | 0 | 02Q | PI134 | 02 | EM | P50 | 02Q | PI | P08 | P | E | 41 | 35 | E4B4 |  | In line Inst. Vendor Data |  |  |  |  |  |  |  |
| EM02FPI132 | 02F Planning Release | 1d | 2006-02-16 A | 2006-02-16 A | EK02FPI050 | 100% |  |  | EBWK 5 Day MEC Holidays | 2006-07-29 | 132 | 0 | 0 | 02F | PI132 | 02 | EM | P20 | 02F | PI | P07 | P | E | 29 | 16 | E4B4 | PS |  |  |  |  |  |  |  |  |
| EM02CPI133 | 02C IDP - Plant Layout | 2d | 2006-02-17 A | 2006-02-21 A | EK02CPI021 | 100% | 2006-02-27 | 2006-02-28 | EBWK 5 Day MEC Holidays | 2006-07-29 | 132 | 0 | 0 | 01A | PI132 | 02 | EM | P20 | 02C | PI | P05 | P | E | 14 | 21 | E4B4 |  |  |  |  |  |  |  |  |  |
| EM02HPI132 | 02H Planning Release | 1d | 2006-02-17 A | 2006-02-17 A | EM02HCV120 FF, EM02HCV125 FF, EM02HPI130, PK02HMD222 FF, EK02HPI050 | 100% |  |  | EBWK 5 Day MEC Holidays | 2006-07-29 | 132 | 0 | 0 | 02H | PI132 | 02 | EM | P20 | 02H | PI | P07 | P | E | 11 | 20 | E4B4 | PS |  |  |  |  |  |  |  |  |
| EM02DPI132 | 02D Planning Release | 1d | 2006-02-21 A | 2006-02-21 A | EM02DCV120 FF, EM02DCV125 FF, EM02DCV160 FF, EM02DPI130, EK02DPI050, EM02DPI133 | 100% |  |  | EBWK 5 Day MEC Holidays | 2006-07-29 | 132 | 0 | 0 | 02D | PI132 | 02 | EM | P20 | 02D | PI | P07 | P | E | 33 | 26 | E4B4 | PS |  |  |  |  |  |  |  |  |
| EM02API200 | 02A Equipment Location Plans | 10d | 2006-02-23 A | 2006-03-28 A | EK020PI013 | 100% | 2006-02-27 | 2006-03-10 | EBWK 5 Day MEC Holidays | 2006-07-29 | 132 | 0 | 0 | 02A | PI132 | 02 | EM | P20 | 02A | PI | P18 | P | E | 36 | 25 | E4B4 |  |  |  |  |  |  |  |  |  |
| EK020PI014 | Plot Plan - ISBL (Area 02) Issue IFC | 56d | 2006-02-27 A | 2006-04-28 A | EK020PI013 | 100% | 2006-02-27 | 2006-05-15 |  | 2006-07-29 |  | 0 | 0 |  |  | 02 | EM | P10 | 020 | PI | P17 | P | E |  |  | E4B4 |  |  | 30 | 17 |  |  |  |  |  |
| EM02BPI134 | 02B Detail Model Development | 20d | 2006-02-27 A | 2006-04-12 A | EM02BPI132, EK02BIC300 FF+3d, PK000ML31N FF+5d, PK02BMLV01 FF | 100% | 2006-02-27 | 2006-03-27 | EBWK 5 Day MEC Holidays | 2006-07-29 | 134 | 0 | 0 | 02B | PI134 | 02 | EM | P50 | 02B | PI | P08 | P | E | 34 | 34 | E4B4 |  |  |  |  |  |  |  |  |  |
| EM02BPI200 | 02B Equipment Location Plans | 10d | 2006-02-27 A | 2006-03-20 A | EK020PI012 | 100% | 2006-02-27 | 2006-03-10 | EBWK 5 Day MEC Holidays | 2006-07-29 | 132 | 0 | 0 | 02A | PI132 | 02 | EM | P20 | 02B | PI | P18 | P | E | 36 | 25 | E4B4 |  |  |  |  |  |  |  |  |  |
| EM02CPI200 | 02C Equipment Location Plans | 25d | 2006-02-27 A | 2006-04-03 A | EK020PI012 | 100% |  |  | EBWK 5 Day MEC Holidays | 2006-07-29 | 132 | 0 | 0 | 02A | PI132 | 02 | EM | P20 | 02C | PI | P18 | P | E | 36 | 25 | E4B4 |  |  |  |  |  |  |  |  |  |
| EM02DPI134 | 02D Detail Model Development | 50d | 2006-02-27 A | 2006-05-18 A | EM02DPI132, PK02DMC116, PK02DMJ154, EM02DPI133, PK02DMD02 FF+10d, PK02DMD03 FF+10d, PK000MD43N, PM000MD44N, PK000MD44J, PK02DMJV02 FF+10d, ZZ1480 FF+9d, EK02DIC300 FF+3d | 100% | 2006-02-27 | 2006-05-11 | EBWK 5 Day MEC Holidays | 2006-07-29 | 134 | 0 | 0 | 02D | PI134 | 02 | EM | P50 | 02D | PI | P08 | P | E | 33 | 26 | E4B4 |  |  |  |  |  |  |  |  |  |
| EM02DPI200 | 02D Equipment Location Plans | 10d | 2006-02-27 A | 2006-03-20 A | EK020PI012 | 100% | 2006-02-27 | 2006-03-10 | EBWK 5 Day MEC Holidays | 2006-07-29 | 132 | 0 | 0 | 02A | PI132 | 02 | EM | P20 | 02D | PI | P18 | P | E | 36 | 25 | E4B4 |  |  |  |  |  |  |  |  |  |
| EM02EPI132 | 02E Planning Release | 1d | 2006-02-27 A | 2006-02-27 A | EM02ECV120 FF, EM02ECV125 FF, EM02ECV160 FF, EM02EPI130, EK02EPI050, EM02EPI133 SS | 100% |  |  | EBWK 5 Day MEC Holidays | 2006-07-29 | 132 | 0 | 0 | 02E | PI132 | 02 | EM | P20 | 02E | PI | P07 | P | E | 32 | 15 | E4B4 | PS |  |  |  |  |  |  |  |  |
| EM02EPI200 | 02E Equipment Location Plans | 15d | 2006-02-27 A | 2006-03-20 A | EK020PI012 | 100% | 2006-02-27 | 2006-03-17 | EBWK 5 Day MEC Holidays | 2006-07-29 | 132 | 0 | 0 | 02A | PI132 | 02 | EM | P20 | 02E | PI | P18 | P | E | 36 | 25 | E4B4 |  |  |  |  |  |  |  |  |  |
| EM02FPI200 | 02F Equipment Location Plans | 10d | 2006-02-27 A | 2006-03-20 A | EK020PI012 | 100% | 2006-02-27 | 2006-03-10 | EBWK 5 Day MEC Holidays | 2006-07-29 | 132 | 0 | 0 | 02A | PI132 | 02 | EM | P20 | 02F | PI | P18 | P | E | 36 | 25 | E4B4 |  |  |  |  |  |  |  |  |  |
| EM02GPI200 | 02G Equipment Location Plans | 46d | 2006-02-27 A | 2006-06-28 A | EK020PI012 | 100% | 2006-02-27 | 2006-05-05 | EBWK 5 Day MEC Holidays | 2006-07-29 | 132 | 0 | 0 | 02A | PI132 | 02 | EM | P20 | 02G | PI | P18 | P | E | 36 | 25 | E4B4 |  |  |  |  |  |  |  |  |  |
| EM02HPI200 | 02H Equipment Location Plans | 15d | 2006-02-27 A | 2006-03-20 A | EK020PI012 | 100% | 2006-02-27 | 2006-03-17 | EBWK 5 Day MEC Holidays | 2006-07-29 | 132 | 0 | 0 | 02A | PI132 | 02 | EM | P20 | 02H | PI | P18 | P | E | 36 | 25 | E4B4 |  |  |  |  |  |  |  |  |  |
| EM02JPI200 | 02J Equipment Location Plans | 15d | 2006-02-27 A | 2006-03-20 A | EK020PI012 | 100% | 2006-02-27 | 2006-03-17 | EBWK 5 Day MEC Holidays | 2006-07-29 | 132 | 0 | 0 | 02A | PI132 | 02 | EM | P20 | 02J | PI | P18 | P | E | 36 | 25 | E4B4 |  |  |  |  |  |  |  |  |  |
| EM02KPI200 | 02K Equipment Location Plans | 15d | 2006-02-27 A | 2006-03-17 A | EK020PI012 | 100% |  |  | EBWK 5 Day MEC Holidays | 2006-07-29 | 132 | 0 | 0 | 02A | PI132 | 02 | EM | P20 | 02K | PI | P18 | P | E | 36 | 25 | E4B4 |  |  |  |  |  |  |  |  |  |
| EM02LPI132 | 02L Planning Release | 1d | 2006-02-27 A | 2006-02-27 A | EM02LCV120 FF, EM02LCV125 FF, EM02LCV160 FF, EK02LPI050 FF, PK02LML100 FF | 100% |  |  | EBWK 5 Day MEC Holidays | 2006-07-29 | 132 | 0 | 0 |  |  | 02 | EM | P20 | 02L | PI | P07 | P | E | 23 | 19 | E4B4 | PS |  |  |  |  |  |  |  |  |
| EM02LPI200 | 02L Equipment Location Plans | 19d | 2006-02-27 A | 2006-03-29 A | EK020PI012 | 100% | 2006-02-27 | 2006-03-24 | EBWK 5 Day MEC Holidays | 2006-07-29 | 132 | 0 | 0 | 02A | PI132 | 02 | EM | P20 | 02L | PI | P18 | P | E | 36 | 25 | E4B4 |  |  |  |  |  |  |  |  |  |
| EM02MPI132 | 02M Planning Release | 1d | 2006-02-27 A | 2006-02-28 A | EM02MCV120 FF, EM02MCV125 FF, EM02MCV160 FF, EK02MPI050 FF, EM02MPI133 | 100% | 2006-02-27 | 2006-02-27 | EBWK 5 Day MEC Holidays | 2006-07-29 | 132 | 0 | 0 | 02M | PI132 | 02 | EM | P20 | 02M | PI | P07 | P | E | 24 | 28 | E4B4 | PS |  |  |  |  |  |  |  |  |
| EM02MPI200 | 02M Equipment Location Plans | 19d | 2006-02-27 A | 2006-03-27 A | EK020PI012 | 100% | 2006-02-27 | 2006-03-24 | EBWK 5 Day MEC Holidays | 2006-07-29 | 132 | 0 | 0 | 02A | PI132 | 02 | EM | P20 | 02M | PI | P18 | P | E | 36 | 25 | E4B4 |  |  |  |  |  |  |  |  |  |
| EM02NPI200 | 02N Equipment Location Plans | 15d | 2006-02-27 A | 2006-03-20 A | EK020PI012 | 100% | 2006-02-27 | 2006-03-17 | EBWK 5 Day MEC Holidays | 2006-07-29 | 132 | 0 | 0 | 02A | PI132 | 02 | EM | P20 | 02N | PI | P18 | P | E | 36 | 25 | E4B4 |  |  |  |  |  |  |  |  |  |
| EM02PPI200 | 02P Equipment Location Plans | 10d | 2006-02-27 A | 2006-03-20 A | EK020PI012 | 100% | 2006-02-27 | 2006-03-10 | EBWK 5 Day MEC Holidays | 2006-07-29 | 132 | 0 | 0 | 02A | PI132 | 02 | EM | P20 | 02P | PI | P18 | P | E | 36 | 25 | E4B4 |  |  |  |  |  |  |  |  |  |
| EM02QPI200 | 02Q Equipment Location Plans | 15d | 2006-02-27 A | 2006-03-20 A | EK020PI012 | 100% | 2006-02-27 | 2006-03-17 | EBWK 5 Day MEC Holidays | 2006-07-29 | 132 | 0 | 0 | 02A | PI132 | 02 | EM | P20 | 02Q | PI | P18 | P | E | 36 | 25 | E4B4 |  |  |  |  |  |  |  |  |  |
| EM02YPI134 | 02Y Detail Model Development | 40d | 2006-02-27 A | 2006-06-05 A | EM02YPI132, EK02YIC300 FF+3d | 100% | 2006-02-27 | 2006-04-26 | EBWK 5 Day MEC Holidays | 2006-07-29 | 134 | 24.7 | 0 | 02Y | PI134 | 02 | EM | P50 | 02Y | PI | P08 | P | E | 8 | 9 | E4B4 |  | 02G, 02C Issues to resolve before complete. |  |  | 40 | 44 | 50 |  |  |
| EM02EPI134 | 02E Detail Model Development | 40d | 2006-02-28 A | 2006-06-13 A | EM02EPI132, PK02EMC116 FF+10d, EM02EPI133, EK02EIC300 FF+2d, PK02EMD01 FF+10d, PK02EMD08 FF+10d, PK000MD34N FF+10d, PM000MD42N FF+10d, PM000MD45N FF+10d, ZZ1510, PK02EMD02 FF, PK02EMD03 FF, PK02EMD04 FF | 100% | 2006-02-28 | 2006-04-27 | EBWK 5 Day MEC Holidays | 2006-07-29 | 134 | 0 | 0 | 02E | PI134 | 02 | EM | P50 | 02E | PI | P08 | P | E | 32 | 15 | E4B4 |  |  |  |  |  |  |  |  |  |
| EM02MPI134 | 02M Detail Model Development | 55d | 2006-02-28 A | 2006-06-26 A | EM02MPI132, PK02MMC116 FF+10d, EM02MPI133, EK02MIC300 SS+3d, PK02MMD11 FF+10d, PK000MD33N FF+10d, PK02MMB02 FF+10d, PK02MMD02, PK02MMD05, PK02MMD06, PK02MMD04, ZZ1910, PK02MMD12 FF+10d, ZZ1700 | 100% | 2006-02-28 | 2006-05-19 | EBWK 5 Day MEC Holidays | 2006-07-29 | 134 | 0 | 0 | 02M | PI134 | 02 | EM | P50 | 02M | PI | P08 | P | E | 24 | 28 | E4B4 |  |  |  |  |  |  |  |  |  |
| EM02NPI132 | 02N Planning Release | 1d | 2006-03-02 A | 2006-03-08 A | EM02NCV160 FF, EK02NPI050 | 100% | 2006-03-02 | 2006-03-02 | EBWK 5 Day MEC Holidays | 2006-07-29 | 132 | 0 | 0 | 02N | PI132 | 02 | EM | P20 | 02N | PI | P07 | P | E | 39 | 37 | E4B4 | PS |  |  |  |  |  |  |  |  |
| EM02LPI134 | 02L Detail Model Development | 55d | 2006-03-09 A | 2006-06-16 A | EM02LPI132, PK02LMC116 FF+10d, PK02LMJ154 FF+10d, EM02LPI133, EK02LIC300 SS, PK02LMD03 FF+10d, PK02LMD04 FF+10d, PK02LMD05 FF+10d, PK02LMD29 FF+10d, PM000MD42N FF+10d, PM000MD44N FF+10d, PK000MD44J FF+10d, PM000MD47N FF+10d, PK000MJ32N FF+10d, PK000MJ37T FF+10d, PK000ML42N FF+10d, PK02LMJV04 FF+10d, PK02LMLV01 FF+10d, PK02LMLV04 FF+10d, PK02LMD01, PK02LMD02, PK02LMLV07, ZZ1760, PK02LMJV02 FF | 100% | 2006-03-15 | 2006-06-05 | EBWK 5 Day MEC Holidays | 2006-07-29 | 134 | 3.7 | 4.1 |  |  | 02 | EM | P50 | 02L | PI | P08 | P | E | 23 | 19 | E4B4 |  |  |  |  | 50 | 55 | 60 |  |  |
| EM02PPI134 | 02P Detail Model Development | 25d | 2006-03-10 A | 2006-04-20 A | EM02PPI132, EK02PIC300 SS+3d, PK000MU35N FF+10d, PK02PMUV01 FF+10d, PK02PMUV02 FF+10d | 100% | 2006-03-10 | 2006-04-18 | EBWK 5 Day MEC Holidays | 2006-07-29 | 134 | 0 | 0 | 02P | PI134 | 02 | EM | P50 | 02P | PI | P08 | P | E | 40 | 36 | E4B4 |  |  |  |  |  |  |  |  |  |
| EM02BPI138 | 02B Design / Issue Pipe Supports IFC | 30d | 2006-03-13 A | 2006-05-15 A | EK000PI051 FF, EM02BPI132, EM02BPI135 FF | 100% | 2006-03-17 | 2006-05-03 | EBWK 5 Day MEC Holidays | 2006-07-29 | 138 | 0 | 0 | 02B | PI138 | 02 | EM | P60 | 02B | PI | P14 | P | E | 34 | 34 | E4B4 |  |  | 74 |  |  |  |  |  |  |
| EM02CPI132 | 02C Planning Release | 1d | 2006-03-13 A | 2006-03-13 A | EK02CPI050 | 100% |  |  | EBWK 5 Day MEC Holidays | 2006-07-29 | 132 | 0 | 0 | 02C | PI132 | 02 | EM | P20 | 02C | PI | P07 | P | E | 14 | 21 | E4B4 | PS |  |  |  |  |  |  |  |  |
| EM02UPICBF | 02U IDP - Detail Design - Benfield Sewer | 5d | 2006-03-13 A | 2006-03-17 A | EK020PI013, EM02UPI190 | 100% |  |  | EBWK 5 Day MEC Holidays | 2006-07-29 |  | 0 | 0 |  |  | 02 | EM | U20 | 02U | PI | P11 | U | E | 1 | 1 | E4B4 |  |  | 50 | 17 | 4 | 5 | 6 | EM02UPICBF | CB |
| EM02UPIFWF | 02U IDP - Detail Design - Firewater | 5d | 2006-03-13 A | 2006-03-17 A | EK020PI013, EM02UPI190, EK02UPIFWC | 100% |  |  | EBWK 5 Day MEC Holidays | 2006-07-29 |  | 0 | 3.8 |  |  | 02 | EM | U20 | 02U | PI | P11 | U | E | 1 | 1 | E4B4 |  |  | 50 | 17 | 4 | 5 | 6 | EM02UPICBF | FW |
| EM02UPIOWF | 02U IDP - Detail Design - Oily Water Sewer | 5d | 2006-03-13 A | 2006-03-17 A | EK020PI013, EM02UPI190 | 100% |  |  | EBWK 5 Day MEC Holidays | 2006-07-29 |  | 0 | 0 |  |  | 02 | EM | U20 | 02U | PI | P11 | U | E | 1 | 1 | E4B4 |  |  | 50 | 17 | 4 | 5 | 6 | EM02UPICBF | OW |

Notes:
- EM02JPI134: basis of schedule: 100 Area Pipes
- EM02BPI134: Corrective Actions: 02B ML313 160-L - Piping Prod. / V. Data 30-May-06
- EM02EPI134: basis of schedule: 77 Area Pipe
- EM02MPI134: basis of schedule: 56 Area Pipe
- EM02PPI134: basis of schedule: 22 Area Pipe

| ID | Activity | Duration | Start | Finish | Predecessors | Complete | Planned start | Planned finish | Calendar | zData Date | PCA Criticality Index | PCA Duration Sensitivity | user_integer2 | user_text2 | EB02 - UNIT | EB01 - RESP | EB06 - WORK OP | EB03 - AREA | EB05 - DISCIPLINE | EB10 - KEY | EB04 - CLASS | EB11 - FLAG | EB00 - EPC | EB14 - RISK | EB15 - Civil / U/G Path of Construction | EB16 - Piping Path of Construction | EB17 - Suffix | EB19 - System | Sequence | User Defined Field 1 | User Definer Field 2 | Optimistic Duration | Most Likely Duration | Pessimistic Duration |
| --- | --- | --- | --- | --- | --- | --- | --- | --- | --- | --- | --- | --- | --- | --- | --- | --- | --- | --- | --- | --- | --- | --- | --- | --- | --- | --- | --- | --- | --- | --- | --- | --- | --- | --- |
| EM02UPICBG | 02U Iso Issue IFC - Metalic Piping (BS & OS) | 22d | 2006-03-17 A | 2006-05-11 A | EM02UPICBF | 100% | 2006-03-27 | 2006-04-27 | EBWK 5 Day MEC Holidays | 2006-07-29 | 0 | 0 | 50 | EM02UPICBG | 02 | EM | U40 | 02U | PI | P13 | U | PS | E | 17 | 1 | 1 | E4B4 | CB |  |  |  |  |  |  |
| EM02UPICWG | 02U U/G Plan Dwgs Issue IFC | 22d | 2006-03-17 A | 2006-05-30 A | EM02UPICBF, EM02UPIOWF, EM02UPIFWF | 100% | 2006-03-27 | 2006-04-27 | EBWK 5 Day MEC Holidays | 2006-07-29 | 0 | 0 | 50 | EM02UPICBG | 02 | EM | U40 | 02U | PI | P13 | U |  | E | 17 | 1 | 1 | E4B4 | CW |  |  |  |  |  |  |
| EM02UPIFWG | 02U Iso Issue IFC - HDPE Piping (FW) | 22d | 2006-03-17 A | 2006-03-31 A | EM02UPIFWF | 100% | 2006-03-27 | 2006-04-27 | EBWK 5 Day MEC Holidays | 2006-07-29 | 0 | 0 | 50 | EM02UPICBG | 02 | EM | U40 | 02U | PI | P13 | U | PS | E | 17 | 1 | 1 | E4B4 | FW |  |  |  |  |  |  |
| EM02UPIOWG | 02U Iso Issue IFC - Other HDPE Piping (OW, PW & CW) | 22d | 2006-03-17 A | 2006-04-17 A | EM02UPIOWF | 100% | 2006-03-27 | 2006-04-27 | EBWK 5 Day MEC Holidays | 2006-07-29 | 0 | 0 | 50 | EM02UPICBG | 02 | EM | U40 | 02U | PI | P13 | U | PS | E | 17 | 1 | 1 | E4B4 | OW |  |  |  |  |  |  |
| EM02CPI134 | 02C Detail Model Development | 70d | 2006-03-22 A | 2006-07-03 A | EM02CPI132, EK02CIC300 FF+3d, PK02CMJV01 FF+10d, PK02CMJV02 FF+10d, PK000MJ75N FF+5d, PK000MJ37T FF+5d, PK02CMJV07 FF+10d, ZZ1420 FF+10d, PK02CMJV04 | 100% | 2006-03-22 | 2006-06-30 | EBWK 5 Day MEC Holidays | 2006-07-29 | 0 | 0 |  |  | 02 | EM | P50 | 02C | PI | P08 | P |  | E |  | 14 | 21 | E4B4 |  | 134 | 02C | PI134 |  |  |  |
| EM02NPI134 | 02N Detail Model Development | 35d | 2006-03-22 A | 2006-05-12 A | EM02NPI132, ZZ1940 FF+10d, ZZ2000 FF+10d, EK02NIC300 SS | 100% |  |  | EBWK 5 Day MEC Holidays | 2006-07-29 | 0 | 0 |  |  | 02 | EM | P50 | 02N | PI | P08 | P |  | E |  | 39 | 37 | E4B4 |  | 134 | 02N | PI134 |  |  |  |
| EM02GPI123 | 02G Plant Layout Nozzle Release | 5d | 2006-03-27 A | 2006-04-21 A | EM02GPI120 SS+30d | 100% | 2006-03-27 | 2006-03-31 | EBWK 5 Day MEC Holidays | 2006-07-29 | 0 | 0 |  |  | 02 | EM | P20 | 02G | PI | P19 | P |  | E |  | 9 | 22 | E4B4 |  | 123 | 02G | PI123 | 4 | 5 | 6 |
| EM02FPI134 | 02F Detail Model Development | 35d | 2006-04-03 A | 2006-06-14 A | EM02FPI132, EK02FIC300 FF+3d, PK000MJ34N FF+5d, PK02FMJV05 FF+10d, PK02FMJV01, PK02FMUV01 | 100% | 2006-04-03 | 2006-05-24 | EBWK 5 Day MEC Holidays | 2006-07-29 | 0 | 0 |  |  | 02 | EM | P50 | 02F | PI | P08 | P |  | E |  | 29 | 16 | E4B4 |  | 134 | 02F | PI134 |  |  |  |
| EM02HPI134 | 02H Detail Model Development | 55d | 2006-04-06 A | 2006-07-10 A | EM02HPI132, EK02HIC300 FF+3d, PK02HMD22 FF+10d, PK02HMD23 FF+10d, PK000MB21N FF+10d, PK000MB33J FF+10d, PM000MD45N FF+10d, PK000MD51N FF+10d, PK02HMB19 FF+10d, PK02HMB32 FF+10d, PK02HMB35 FF+10d, PK02HMB41 FF+10d, PK02HMB50 FF+6d, PK02HMD21 FF+10d, ZZ1790 FF+10d, PK02HMB38 FF+10d | 100% | 2006-04-06 | 2006-06-26 | EBWK 5 Day MEC Holidays | 2006-07-29 | 0 | 0 |  |  | 02 | EM | P50 | 02H | PI | P08 | P |  | E |  | 11 | 20 | E4B4 |  | 134 | 02H | PI134 |  |  |  |
| EM02PPI142 | 02P Detail OP's & Service Model Review Mtg | 2d | 2006-04-18 A | 2006-04-20 A | EM02PPI134 | 100% | 2006-04-21 | 2006-04-24 | EBWK 5 Day MEC Holidays | 2006-07-29 | 0 | 0 |  |  | 02 | EM | P20 | 02P | PI | P09 | P |  | E |  | 40 | 36 | E4B4 |  | 130 | 02P | PI130 |  |  |  |
| EM02BPI142 | 02B Detail OP's & Service Model Review Mtg | 2d | 2006-04-18 A | 2006-04-19 A | EM02BPI134 | 100% |  |  | EBWK 5 Day MEC Holidays | 2006-07-29 | 0 | 0 |  |  | 02 | EM | P20 | 02B | PI | P09 | P |  | E |  | 34 | 34 | E4B4 |  | 130 | 02B | PI130 |  |  |  |
| EM02BPI143 | 02B OP's & Serv. Model Review Comment Resolution | 2d | 2006-04-20 A | 2006-04-21 A | EM02BPI142 | 100% |  |  | EBWK 5 Day MEC Holidays | 2006-07-29 | 0 | 0 |  |  | 02 | EM | P20 | 02B | PI | P10 | P |  | E |  | 34 | 34 | E4B4 |  | 130 | 02B | PI130 |  |  |  |
| EM02API134 | 02A Detail Model Development | 40d | 2006-04-21 A | 2006-06-16 A | EM02API132, EK02AIC300 FF+3d, PK02AMD01 FF+10d, PK02AMD02 FF+10d, PK02AMD03 FF+10d, PK02AMC17 FF+10d, PK02AMD04 FF+10d, PK02AMD05 FF+10d, PK02AMD06 FF+10d, PK02AMJV01, PK02AMC14 FF+4d, PK02AMC14 FF | 100% |  |  | EBWK 5 Day MEC Holidays | 2006-07-29 | 0 | 0 |  |  | 02 | EM | P50 | 02A | PI | P08 | P |  | E |  | 36 | 25 | E4B4 |  | 134 | 02A | PI134 |  |  |  |
| EM02PPI143 | 02P OP's & Serv. Model Review Comment Resolution | 2d | 2006-04-21 A | 2006-05-01 A | EM02PPI142 | 100% | 2006-04-21 | 2006-04-24 | EBWK 5 Day MEC Holidays | 2006-07-29 | 0 | 0 |  |  | 02 | EM | P20 | 02P | PI | P10 | P |  | E |  | 40 | 36 | E4B4 |  | 130 | 02P | PI130 |  |  |  |
| EM02BPI136 | 02B IDP - Detail Design | 2d | 2006-04-24 A | 2006-04-25 A | EM02BPI143 | 100% |  |  | EBWK 5 Day MEC Holidays | 2006-07-29 | 0 | 0 |  |  | 02 | EM | P50 | 02B | PI | P11 | P |  | E |  | 34 | 34 | E4B4 |  | 132 | 01A | PI132 |  |  |  |
| EM02BPI135 | 02B A/G Piping Iso's - Issue IFC | 2d | 2006-04-28 A | 2006-05-15 A | EM02BPI134 SS+10d, EM02BPI134 FF, EK02BPI144 | 100% | 2006-05-02 | 2006-05-03 | EBWK 5 Day MEC Holidays | 2006-07-29 | 0 | 0 | 5 |  | 02 | EM | P50 | 02B | PI | P13 | P | PS | E |  | 34 | 34 | E4B4 |  | 135 | 02B | PI135 |  |  |  |
| EM02PPI136 | 02P IDP - Detail Design | 2d | 2006-05-01 A | 2006-05-01 A | EM02PPI143 | 100% | 2006-05-11 | 2006-05-12 | EBWK 5 Day MEC Holidays | 2006-07-29 | 0 | 0 |  |  | 02 | EM | P50 | 02P | PI | P11 | P |  | E |  | 40 | 36 | E4B4 |  | 132 | 01A | PI132 |  |  |  |
| EM02PPI135 | 02P A/G Piping Iso's - Issue IFC | 10d | 2006-05-15 A | 2006-05-16 A | EM02PPI134 SS+20d, EM02PPI134 FF, EK02PPI144 | 100% | 2006-05-16 | 2006-05-29 | EBWK 5 Day MEC Holidays | 2006-07-29 | 0 | 0 | 5 |  | 02 | EM | P50 | 02P | PI | P13 | P | PS | E |  | 40 | 36 | E4B4 |  | 135 | 02P | PI135 |  |  |  |
| EM02PPI138 | 02P Design / Issue Pipe Supports IFC | 10d | 2006-05-15 A | 2006-05-16 A | EK000PI051 FF, EM02PPI132, EM02PPI134 SS, EM02PPI135 FF | 100% | 2006-05-16 | 2006-05-29 | EBWK 5 Day MEC Holidays | 2006-07-29 | 0 | 0 | 68 |  | 02 | EM | P60 | 02P | PI | P14 | P |  | E |  | 40 | 36 | E4B4 |  | 138 | 02P | PI138 |  |  |  |
| EM02NPI142 | 02N Detail OP's & Service Model Review Mtg | 2d | 2006-05-16 A | 2006-05-17 A | EM02NPI134, EM02NSY172 | 100% | 2006-05-19 | 2006-05-22 | EBWK 5 Day MEC Holidays | 2006-07-29 | 0 | 0 |  |  | 02 | EM | P20 | 02N | PI | P09 | P |  | E |  | 39 | 37 | E4B4 |  | 130 | 02N | PI130 |  |  |  |
| EM02GPI130 | 02G Model Review Mtg | 3d | 2006-05-17 A | 2006-05-19 A | EK020PI011, EM02GPI120, EM02GPI123 FF | 100% | 2006-05-18 | 2006-05-22 | EBWK 5 Day MEC Holidays | 2006-07-29 | 3.6 | 5.1 |  |  | 02 | EM | P20 | 02G | PI | P03 | P |  | E |  | 9 | 22 | E4B4 |  | 130 | 02G | PI130 | 2 | 3 | 4 |
| EM02NPI143 | 02N OP's & Service Model Review Comment Resolution | 2d | 2006-05-17 A | 2006-05-31 A | EM02NPI142 | 100% | 2006-05-23 | 2006-05-24 | EBWK 5 Day MEC Holidays | 2006-07-29 | 0 | 0 |  |  | 02 | EM | P20 | 02N | PI | P10 | P |  | E |  | 39 | 37 | E4B4 |  | 130 | 02N | PI130 |  |  |  |
| EM02GPI021 | 02G Model Review Comment Resolution | 5d | 2006-05-22 A | 2006-07-05 A | EM02GPI130 | 100% | 2006-05-23 | 2006-05-29 |  | 2006-07-29 | 3.6 | 0 |  |  | 02 | EM | P50 | 02G | PI | P04 | P |  | E |  |  |  |  |  |  |  |  | 4 | 5 | 6 |
| EM02DPI141 | 02D Detail OP's & Services Model Review Mtg | 2d | 2006-05-25 A | 2006-05-25 A | EM02DPI134, EM02DSY172 | 100% | 2006-05-26 | 2006-05-29 | EBWK 5 Day MEC Holidays | 2006-07-29 | 0 | 0 |  |  | 02 | EM | P20 | 02D | PI | P09 | P |  | E |  | 33 | 26 | E4B4 |  | 132 | 02D | PI132 |  |  |  |
| EM02DPI142 | 02D OP's & Serv. Model Review Comment Resolution | 2d | 2006-05-26 A | 2006-06-08 A | EM02DPI141 | 100% | 2006-05-30 | 2006-05-31 | EBWK 5 Day MEC Holidays | 2006-07-29 | 0 | 0 |  |  | 02 | EM | P20 | 02D | PI | P10 | P |  | E |  | 33 | 26 | E4B4 |  | 132 | 02D | PI132 |  |  |  |
| EM02QPI142 | 02Q Detail OP's & Service Model Review Mtg | 2d | 2006-05-31 A | 2006-05-31 A | EM02QPI134 FS+1d | 100% | 2006-06-05 | 2006-06-06 | EBWK 5 Day MEC Holidays | 2006-07-29 | 0 | 0 |  |  | 02 | EM | P20 | 02Q | PI | P09 | P |  | E |  | 41 | 35 | E4B4 |  | 130 | 02Q | PI130 |  |  |  |
| EM02QPI143 | 02Q OP's & Service Model Review Comment Resolution | 2d | 2006-05-31 A | 2006-06-13 A | EM02QPI142 | 100% | 2006-06-07 | 2006-06-08 | EBWK 5 Day MEC Holidays | 2006-07-29 | 0 | 0 |  |  | 02 | EM | P20 | 02Q | PI | P10 | P |  | E |  | 41 | 35 | E4B4 |  | 130 | 02Q | PI130 |  |  |  |
| EM02YPI142 | 02Y Detail OP's & Services Model Review Mtg | 5d | 2006-06-03 A | 2006-06-06 A | EM02YPI134 FF | 100% | 2006-06-05 | 2006-06-09 | EBWK 5 Day MEC Holidays | 2006-07-29 | 24.7 | 4 |  |  | 02 | EM | P20 | 02Y | PI | P09 | P |  | E |  | 30 | 27 | E5B5 |  | 134 | 01A | PI134 | 4 | 5 | 6 |
| EM02NPI136 | 02N IDP - Detail Design | 5d | 2006-06-05 A | 2006-06-09 A | EM02NPI143 | 100% | 2006-06-12 | 2006-06-16 | EBWK 5 Day MEC Holidays | 2006-07-29 | 0 | 0 |  |  | 02 | EM | P50 | 02N | PI | P11 | P |  | E |  | 39 | 37 | E4B4 |  | 132 | 01A | PI132 |  |  |  |
| EM02YPI143 | 02Y OP's & Serv. Model Review Comments Resolution | 5d | 2006-06-06 A | 2006-06-27 A | EM02YPI142 SS | 100% | 2006-06-12 | 2006-06-16 | EBWK 5 Day MEC Holidays | 2006-07-29 | 24.7 | 0 |  |  | 02 | EM | P20 | 02Y | PI | P10 | P |  | E |  | 30 | 27 | E5B5 |  | 134 | 01A | PI134 | 4 | 5 | 6 |
| EM02DPI136 | 02D IDP - Detail Design | 5d | 2006-06-09 A | 2006-06-14 A | EM02DPI134, EM02DPI142 | 100% | 2006-06-13 | 2006-06-19 | EBWK 5 Day MEC Holidays | 2006-07-29 | 0 | 0 |  |  | 02 | EM | P50 | 02D | PI | P11 | P |  | E |  | 33 | 26 | E4B4 |  | 132 | 01A | PI132 |  |  |  |
| EM02KPI134 | 02K Plant Detail Model Development | 25d | 2006-06-12 A | 2006-07-17 A | EM02KPI140, PK02KMC116 FF+10d, PK02KMJ154 FF+10d, EM02KPI133, EM02KPI051, EK02KIC300 FF+3d, PK02KMD11 FF+10d, PK02KMF05 FF+10d, PK02KMD06 FF+10d, PK02KMD10 FF+10d, PM000MD45N FF+10d, PK000MJ37T FF+10d, PK000MJ38T FF+10d, PK000ML42N FF+10d, PK000ML43N FF+10d, PK02KMJV01 FF+10d, PK02KMJV02 FF+10d, ZZ1610 FF+10d, ZZ2030 FF+10d, PK02KMLV01 FF+10d, PK02KMLV04 FF+10d | 100% | 2006-06-12 | 2006-07-14 | EBWK 5 Day MEC Holidays | 2006-07-29 | 0 | 0 |  |  | 02 | EM | P50 | 02K | PI | P08 | P |  | E |  | 19 | 17 | E4B4 |  | 134 | 02K | PI134 |  |  |  |
| EM02EPI141 | 02E Detail OP's & Services Model Review Mtg | 2d | 2006-06-14 A | 2006-06-19 A | EM02EPI134 | 100% | 2006-06-14 | 2006-06-15 | EBWK 5 Day MEC Holidays | 2006-07-29 | 0 | 0 |  |  | 02 | EM | P20 | 02E | PI | P09 | P |  | E |  | 32 | 15 | E4B4 |  | 132 | 01A | PI132 |  |  |  |
| EM02QPI136 | 02Q IDP - Detail Design | 5d | 2006-06-14 A | 2006-06-20 A | EM02QPI143 | 100% |  |  | EBWK 5 Day MEC Holidays | 2006-07-29 | 0 | 0 |  |  | 02 | EM | P50 | 02Q | PI | P11 | P |  | E |  | 41 | 35 | E4B4 |  | 132 | 01A | PI132 |  |  |  |
| EM02FPI141 | 02F Detail OP's & Services Model Review Mtg | 2d | 2006-06-15 A | 2006-06-20 A | EM02FPI134 | 100% | 2006-06-15 | 2006-06-16 | EBWK 5 Day MEC Holidays | 2006-07-29 | 0 | 0 |  |  | 02 | EM | P20 | 02F | PI | P09 | P |  | E |  | 29 | 16 | E4B4 |  | 130 | 02F | PI130 |  |  |  |
| EM02API142 | 02A Detail OP's & Service Model Review Mtg | 2d | 2006-06-19 A | 2006-06-20 A | EM02API134 | 100% |  |  | EBWK 5 Day MEC Holidays | 2006-07-29 | 0 | 0 |  |  | 02 | EM | P20 | 02A | PI | P09 | P |  | E |  | 36 | 25 | E4B4 |  | 130 | 02A | PI130 |  |  |  |
| EM02NPI135 | 02N A/G Piping Iso's - Issue IFC | 10d | 2006-06-19 A | 2006-07-07 A | EM02NPI134 SS+20d, EM02NPI134 FF, EK02NPI144 | 100% | 2006-06-19 | 2006-06-30 | EBWK 5 Day MEC Holidays | 2006-07-29 | 0 | 0 | 5 |  | 02 | EM | P50 | 02N | PI | P13 | P | PS | E |  | 39 | 37 | E4B4 |  | 135 | 02N | PI135 |  |  |  |
| EM02NPI138 | 02N Design / Issue Pipe Supports IFC | 10d | 2006-06-19 A | 2006-07-07 A | EK000PI051 FF, EM02NPI132, EM02NPI134 SS, EM02NPI135 FF | 100% | 2006-06-19 | 2006-06-30 | EBWK 5 Day MEC Holidays | 2006-07-29 | 0 | 0 | 74 |  | 02 | EM | P60 | 02N | PI | P14 | P | PS | E |  | 39 | 37 | E4B4 |  | 138 | 02N | PI138 |  |  |  |
| EM02EPI142 | 02E OP's & Serv. Model Review Comment Resolution | 2d | 2006-06-22 A | 2006-07-12 A | EM02EPI141 | 100% | 2006-06-19 | 2006-06-20 | EBWK 5 Day MEC Holidays | 2006-07-29 | 0 | 0 |  |  | 02 | EM | P20 | 02E | PI | P10 | P |  | E |  | 32 | 15 | E4B4 |  | 132 | 01A | PI132 |  |  |  |
| EM02QPI135 | 02Q A/G Piping Iso's - Issue IFC | 15d | 2006-06-22 A | 2006-10-20 A | EM02QPI136, EM02QMD229 FF, EK2QPI144 | 100% | 2006-06-27 | 2006-07-17 | EBWK 5 Day MEC Holidays | 2006-07-29 | 0 | 0 | 5 |  | 02 | EM | P50 | 02Q | PI | P13 | P | PS | E |  | 41 | 35 | E4B4 |  | 135 | 02Q | PI135 |  |  |  |
| EM02QPI138 | 02Q Design / Issue Pipe Supports IFC | 15d | 2006-06-22 A | 2006-10-20 A | EK000PI051 FF, EM02QPI132, EM02QPI134 SS, EM02QPI135 FF | 100% | 2006-06-27 | 2006-07-17 | EBWK 5 Day MEC Holidays | 2006-07-29 | 0 | 0 | 74 |  | 02 | EM | P60 | 02Q | PI | P14 | P | PS | E |  | 41 | 35 | E4B4 |  | 138 | 02Q | PI138 |  |  |  |
| EM02LPI141 | 02L Detail OP's & Services Model Review Mtg | 2d | 2006-06-23 A | 2006-06-26 A | EM02LPI134 | 100% |  |  | EBWK 5 Day MEC Holidays | 2006-07-29 | 3.7 | 0.6 |  |  | 02 | EM | P20 | 02L | PI | P09 | P |  | E |  | 23 | 19 | E4B4 |  | 134 |  |  | 1 | 2 | 3 |
| EM02API143 | 02A OP's & Serv. Model Review Comment Resolution | 2d | 2006-06-26 A | 2006-06-29 A | EM02API142 | 100% | 2006-06-26 | 2006-06-27 | EBWK 5 Day MEC Holidays | 2006-07-29 | 0 | 0 |  |  | 02 | EM | P20 | 02A | PI | P10 | P |  | E |  | 36 | 25 | E4B4 |  | 130 | 02A | PI130 |  |  |  |
| EM02FPI142 | 02F OP's & Serv. Model Review Comment Resolution | 2d | 2006-06-26 A | 2006-06-29 A | EM02FPI141 | 100% | 2006-06-26 | 2006-06-27 | EBWK 5 Day MEC Holidays | 2006-07-29 | 0 | 0 |  |  | 02 | EM | P20 | 02F | PI | P10 | P |  | E |  | 29 | 16 | E4B4 |  | 130 | 02F | PI130 |  |  |  |
| EM02JPI141 | 02J Detail OP's & Services Model Review Mtg | 5d | 2006-06-26 A | 2006-06-27 A | EM02JPI134 | 100% | 2006-06-26 | 2006-06-30 | EBWK 5 Day MEC Holidays | 2006-07-29 | 0 | 0 |  |  | 02 | EM | P20 | 02J | PI | P09 | P |  | E |  | 30 | 27 | E5B5 |  | 134 | 01A | PI134 |  |  |  |
| EM02LPI142 | 02L OP's & Serv. Model Review Comment Resolution | 2d | 2006-06-27 A | 2006-07-24 A | EM02LPI141 | 100% | 2006-06-27 | 2006-06-28 | EBWK 5 Day MEC Holidays | 2006-07-29 | 3.7 | 0 |  |  | 02 | EM | P20 | 02L | PI | P10 | P |  | E |  | 23 | 19 | E4B4 |  | 134 |  |  | 1 | 2 | 3 |
| EM02MPI141 | 02M Detail OP's & Services Model Review Mtg | 2d | 2006-06-27 A | 2006-06-28 A | EM02MPI134 | 100% |  |  | EBWK 5 Day MEC Holidays | 2006-07-29 | 0 | 0 |  |  | 02 | EM | P20 | 02M | PI | P09 | P |  | E |  | 24 | 28 | E4B4 |  | 130 | 02M | PI130 |  |  |  |
| EM02YPI136 | 02Y IDP - Detail Design | 2d | 2006-06-28 A | 2006-06-28 A | EM02YPI143 | 100% | 2006-06-27 | 2006-06-28 | EBWK 5 Day MEC Holidays | 2006-07-29 | 24.7 | 5.5 |  |  | 02 | EM | P50 | 02Y | PI | P11 | P |  | E |  | 8 | 9 | E4B4 |  | 132 | 01A | PI132 | 1 | 2 | 3 |
| EM02JPI143 | 02J OP's & Serv. Model Review Comments Resolution | 5d | 2006-06-28 A | 2006-07-04 A | EM02JPI141 | 100% |  |  | EBWK 5 Day MEC Holidays | 2006-07-29 | 0 | 0 |  |  | 02 | EM | P20 | 02J | PI | P10 | P |  | E |  | 30 | 27 | E5B5 |  | 134 | 01A | PI134 |  |  |  |
| EM02API136 | 02A IDP - Detail Design | 5d | 2006-06-29 A | 2006-07-04 A | EM02API143 | 100% | 2006-06-28 | 2006-07-04 | EBWK 5 Day MEC Holidays | 2006-07-29 | 0 | 0 |  |  | 02 | EM | P50 | 02A | PI | P11 | P |  | E |  | 36 | 25 | E4B4 |  | 132 | 01A | PI132 |  |  |  |
| EM02MPI142 | 02M OP's & Serv. Model Review Comment Resolution | 2d | 2006-06-29 A | 2006-07-03 A | EM02MPI141 | 100% | 2006-06-30 | 2006-07-03 | EBWK 5 Day MEC Holidays | 2006-07-29 | 0 | 0 |  |  | 02 | EM | P20 | 02M | PI | P10 | P |  | E |  | 24 | 28 | E4B4 |  | 130 | 02M | PI130 |  |  |  |
| EM02FPI136 | 02F IDP - Detail Design | 5d | 2006-06-30 A | 2006-07-04 A | EM02FPI142 | 100% | 2006-06-26 | 2006-06-30 | EBWK 5 Day MEC Holidays | 2006-07-29 | 0 | 0 |  |  | 02 | EM | P50 | 02F | PI | P11 | P |  | E |  | 29 | 16 | E4B4 |  | 132 | 01A | PI132 |  |  |  |
| EM02FPI135 | 02F A/G Piping Iso's - Issue IFC | 35d | 2006-07-03 A | 2006-10-20 A | EM02FPI134 SS+20d, EM02FPI134 FF, EM02FPI136, EK02FPI143 SS | 100% | 2006-07-12 | 2006-08-29 | EBWK 5 Day MEC Holidays | 2006-07-29 | 0 | 0 | 10 |  | 02 | EM | P50 | 02F | PI | P13 | P | PS | E |  | 29 | 16 | E4B4 |  | 135 | 02F | PI135 |  |  |  |
| EM02CPI141 | 02C Detail OP's & Services Model Review Mtg | 5d | 2006-07-03 A | 2006-07-10 A | EM02CPI134 | 100% | 2006-07-03 | 2006-07-07 | EBWK 5 Day MEC Holidays | 2006-07-29 | 0 | 0 |  |  | 02 | EM | P20 | 02C | PI | P09 | P |  | E |  | 30 | 27 | E5B5 |  | 134 | 01A | PI134 |  |  |  |
| EM02FPI138 | 02F Design / Issue Pipe Supports IFC | 45d | 2006-07-03 A | 2006-10-20 A | EK000PI051 FF, EM02FPI132, EM02FPI134 SS, EM02FPI135 FF | 100% | 2006-07-03 | 2006-09-01 | EBWK 5 Day MEC Holidays | 2006-07-29 | 0 | 0 | 50 |  | 02 | EM | P60 | 02F | PI | P14 | P | PS | E |  | 29 | 16 | E4B4 |  | 138 | 02F | PI138 |  |  |  |
| EM02YPI135 | 02Y A/G Piping Iso's - Issue IFC | 47d | 2006-07-04 A | 2006-10-04 A | EK02YPI144 | 100% | 2006-07-03 | 2006-09-05 | EBWK 5 Day MEC Holidays | 2006-07-29 | 0 | 0 | 20 |  | 02 | EM | P50 | 02Y | PI | P13 | P | PS | E | 17 | 8 | 9 | E4B4 |  | 135 | 02Y | PI135 |  |  |  |
| EM02DPI135 | 02D A/G Piping Iso's - Issue IFC | 35d | 2006-07-04 A | 2006-08-07 A | EM02DPI134 SS+10d, EM02DPI134 FF, EM02DPI136, EM02DMD229 FF, EK02DPI143, PK000MD43N FF+10d, PM000MD44N FF+10d, PK000MD44J FF+10d, PK000MJ37T FF+10d, PK000MJ38T FF+10d | 100% | 2006-07-04 | 2006-08-21 | EBWK 5 Day MEC Holidays | 2006-07-29 | 0 | 0 | 5 |  | 02 | EM | P50 | 02D | PI | P13 | P | PS | E |  | 33 | 26 | E4B4 |  | 135 | 02D | PI135 |  |  |  |
| EM02DPI138 | 02D Design / Issue Pipe Supports IFC | 45d | 2006-07-04 A | 2006-08-07 A | EK000PI051 FF, EM02DPI132, EM02DPI134 SS, EM02DPI135 FF | 100% | 2006-07-04 | 2006-09-04 | EBWK 5 Day MEC Holidays | 2006-07-29 | 0 | 0 | 48 |  | 02 | EM | P60 | 02D | PI | P14 | P | PS | E |  | 33 | 26 | E4B4 |  | 138 | 02D | PI138 |  |  |  |
| EM02MPI136 | 02M IDP - Detail Design | 5d | 2006-07-04 A | 2006-07-10 A | EM02MPI142 | 100% |  |  | EBWK 5 Day MEC Holidays | 2006-07-29 | 0 | 0 |  |  | 02 | EM | P50 | 02M | PI | P11 | P |  | E |  | 24 | 28 | E4B4 |  | 132 | 01A | PI132 |  |  |  |
| EM02YPI138 | 02Y Design / Issue Pipe Supports IFC | 45d | 2006-07-04 A | 2006-09-30 A | EK000PI051 FF, EM02YPI132, EM02YPI134 SS, EM02YPI135 FF | 100% | 2006-07-04 | 2006-09-05 | EBWK 5 Day MEC Holidays | 2006-07-29 | 0 | 0 | 110 |  | 02 | EM | P60 | 02Y | PI | P14 | P | PS | E | 17 | 8 | 9 | E4B4 |  | 138 | 02Y | PI138 |  |  |  |
| EM02GPI132 | 02G Planning Release | 6d | 2006-07-05 A | 2006-08-21 A | EK02GPI050 FF | 100% | 2006-07-05 | 2006-07-12 | EBWK 5 Day MEC Holidays | 2006-07-29 | 4.6 | 2.8 |  |  | 02 | EM | P20 | 02G | PI | P07 | P | PS | E |  | 9 | 22 | E4B4 |  | 132 | 02G | PI132 | 5 | 6 | 8 |
| EM02JPI136 | 02J IDP - Detail Design | 2d | 2006-07-05 A | 2006-07-06 A | EM02JPI143 | 100% |  |  | EBWK 5 Day MEC Holidays | 2006-07-29 | 0 | 0 |  |  | 02 | EM | P50 | 02J | PI | P11 | P |  | E |  | 18 | 30 | E4B4 |  | 132 | 01A | PI132 |  |  |  |
| EM02CPI143 | 02C OP's & Serv. Model Review Comments Resolution | 5d | 2006-07-11 A | 2006-08-02 A | EM02CPI141 | 100% | 2006-07-10 | 2006-07-14 | EBWK 5 Day MEC Holidays | 2006-07-29 | 0 | 0 |  |  | 02 | EM | P20 | 02C | PI | P10 | P |  | E |  | 30 | 27 | E5B5 |  | 134 | 01A | PI134 |  |  |  |
| EM02HPI141 | 02H Detail OP's & Services Model Review Mtg | 5d | 2006-07-11 A | 2006-07-13 A | EM02HPI134 | 100% | 2006-07-11 | 2006-07-17 | EBWK 5 Day MEC Holidays | 2006-07-29 | 0 | 0 |  |  | 02 | EM | P20 | 02H | PI | P09 | P |  | E |  | 30 | 27 | E5B5 |  | 134 | 01A | PI134 |  |  |  |
| EM02EPI136 | 02E IDP - Detail Design | 5d | 2006-07-12 A | 2006-07-17 A | EM02EPI134, EM02EPI142 | 100% | 2006-07-10 | 2006-07-14 | EBWK 5 Day MEC Holidays | 2006-07-29 | 0 | 0 |  |  | 02 | EM | P50 | 02E | PI | P11 | P |  | E |  | 32 | 15 | E4B4 |  | 132 | 01A | PI132 |  |  |  |
| EM02HPI143 | 02H OP's & Serv. Model Review Comments Resolution | 5d | 2006-07-14 A | 2006-08-21 A | EM02HPI141 | 100% | 2006-07-20 | 2006-07-26 | EBWK 5 Day MEC Holidays | 2006-07-29 | 0 | 0 |  |  | 02 | EM | P20 | 02H | PI | P10 | P |  | E |  | 30 | 27 | E5B5 |  | 134 | 01A | PI134 |  |  |  |
| EM02GPI133 | 02G IDP - Plant Layout | 2d | 2006-07-17 A | 2006-08-10 A | EM02GPI021 | 100% | 2006-07-17 | 2006-07-18 | EBWK 5 Day MEC Holidays | 2006-07-29 | 4.9 | 0.3 |  |  | 02 | EM | P20 | 02G | PI | P05 | P |  | E |  | 9 | 22 | E4B4 |  | 132 | 01A | PI132 | 1 | 2 | 3 |
| EM02KPI141 | 02K Detail OP's & Services Model Review Mtg | 2d | 2006-07-18 A | 2006-07-19 A | EM02KPI134, EM02KSY172 | 100% |  |  | EBWK 5 Day MEC Holidays | 2006-07-29 | 0 | 0 |  |  | 02 | EM | P20 | 02K | PI | P09 | P |  | E |  | 19 | 17 | E4B4 |  | 134 | 02K | PI134 |  |  |  |
| EM02KPI142 | 02K OP's & Serv. Model Review Comment Resolution | 2d | 2006-07-20 A | 2006-08-16 A | EM02KPI141 | 100% | 2006-07-24 | 2006-07-25 | EBWK 5 Day MEC Holidays | 2006-07-29 | 0 | 0 |  |  | 02 | EM | P20 | 02K | PI | P10 | P |  | E |  | 19 | 17 | E4B4 |  | 134 | 02K | PI134 |  |  |  |
| EM02LPI135 | 02L A/G Piping Iso's - Issue IFC | 31d | 2006-07-21 A | 2006-12-22 A | EM02LPI134 SS+20d, EM02LPI134 FF, EM02LPI136 SS, EM02LMD229 FF, EK02LPI143 | 100% | 2006-08-07 | 2006-09-18 | EBWK 5 Day MEC Holidays | 2006-07-29 | 0.9 | 0 | 10 |  | 02 | EM | P50 | 02L | PI | P13 | P | PS | E | 17 | 23 | 19 | E4B4 |  | 135 |  |  | 30 | 31 | 35 |

Notes:
- EM02CPI134: user_text1: 02C In Line Instrument Approved Vendor Data,Noise Containment Piping Changes
- EM02NPI134: basis of schedule: 47 Area Pipes
- EM02GPI123: user_text1: 02G MJ201 101-JC1,JC2,JC3,JC4
- EM02HPI134: basis of schedule: 378 Area Pipe
- EM02API134: basis of schedule: 44 Area Pipe
- EM02NPI135: user_text1: 71% complete on 30-June.
- EM02NPI138: user_text1: 71% complete on 30-June.
- EM02QPI135: user_text1: 100% Complete as of Oct. 19th.
- EM02QPI138: user_text1: 100% Complete as of Oct. 19th.
- EM02FPI135: user_text1: 100% Complete as of Oct. 19th.
- EM02FPI138: user_text1: 100% Complete as of Oct. 19th.
- EM02YPI135: user_text1: 100% Complete as of Oct. 5th.
- EM02DPI135: user_text1: 95% Complete as of Aug 3rd.
- EM02DPI138: user_text1: 95% Complete as of Aug 3rd.
- EM02YPI138: user_text1: 99% Complete as of Sep. 28st.
- EM02LPI135: user_text1: 100% Complete as of Dec 30th.

| ID | Activity | Duration | Start | Finish | Predecessors | Complete | Remaining | Planned start | Planned finish | Total float | Free float | Expected finish | Calendar | zData Date | Sequence | PCA Criticality Index | PCA Duration Sensitivity | user_integer2 | user_text1 | EB02 - UNIT | EB01 - RESP | EB06 - WORK OP | EB03 - AREA | EB05 - DISCIPLINE | EB10 - KEY | EB04 - CLASS | EB11 - FLAG | EB00 - EPC | EB14 - RISK | EB15 - Civil / U/G Path of Construction | EB16 - Piping Path of Construction | EB17 - Suffix | User Defined Field 1 | User Definer Field 2 | Optimistic Duration | Most Likely Duration | Pessimistic Duration |
| --- | --- | --- | --- | --- | --- | --- | --- | --- | --- | --- | --- | --- | --- | --- | --- | --- | --- | --- | --- | --- | --- | --- | --- | --- | --- | --- | --- | --- | --- | --- | --- | --- | --- | --- | --- | --- | --- |
| EM02LPI138 | 02L Design / Issue Pipe Supports IFC | 31d | 2006-07-21 A | 2006-12-22 A | EK000PI051 FF, EM02LPI132, EM02LPI134 SS, EM02LPI135 FF | 100% |  | 2006-08-07 | 2006-09-18 |  |  |  | EBWK 5 Day MEC Holidays | 2006-07-29 | 138 | 0 | 0 | 80 | 100% Complete as of Dec 30th. | 02 | EM | P60 | 02L | PI | P14 | P | PS | E | 17 | 23 | 19 | E4B4 |  |  |  |  |  |
| EM02API135 | 02A A/G Piping Iso's - Issue IFC | 20d | 2006-07-24 A | 2006-12-22 A | EM02AMD229 FF, EK02API144 | 100% |  | 2006-07-24 | 2006-08-18 |  |  |  | EBWK 5 Day MEC Holidays | 2006-07-29 | 135 | 0 | 0 | 5 | 100% Complete as of Dec 30th. | 02 | EM | P50 | 02A | PI | P13 | P | PS | E |  | 36 | 25 | E4B4 | 02A | PI135 |  |  |  |
| EM02API138 | 02A Design / Issue Pipe Supports IFC | 45d | 2006-07-24 A | 2006-12-22 A | EK000PI051 FF, EM02API132, EM02API134 SS, EM02API135 FF | 100% |  | 2006-07-24 | 2006-09-22 |  |  |  | EBWK 5 Day MEC Holidays | 2006-07-29 | 138 | 0 | 0 | 88 | 100% Complete as of Dec 30th. | 02 | EM | P60 | 02A | PI | P14 | P | PS | E |  | 36 | 25 | E4B4 | 02A | PI138 |  |  |  |
| EM02JPI135 | 02J A/G Piping Iso's - Issue IFC | 45d | 2006-07-24 A | 2006-12-15 A | EM02JMD229 FF, EK02JPI144 | 100% |  | 2006-07-24 | 2006-09-22 |  |  |  | EBWK 5 Day MEC Holidays | 2006-07-29 | 135 | 0 | 0 | 10 | 100% Complete as of Dec 7th. | 02 | EM | P50 | 02J | PI | P13 | P | PS | E | 17 | 18 | 30 | E4B4 | 02J | PI135 |  |  |  |
| EM02LPI136 | 02L IDP - Detail Design | 5d | 2006-07-24 A | 2006-07-28 A | EM02LPI142 | 100% |  |  |  |  |  |  | EBWK 5 Day MEC Holidays | 2006-07-29 | 132 | 3.7 | 0 |  |  | 02 | EM | P50 | 02L | PI | P11 | P |  | E |  | 23 | 19 | E4B4 | 01A | PI132 | 4 | 5 | 6 |
| EM02JPI138 | 02J Design / Issue Pipe Supports IFC | 45d | 2006-07-24 A | 2006-12-15 A | EK000PI051 FF, EM02JPI135 FF | 100% |  | 2006-07-24 | 2006-09-25 |  |  |  | EBWK 5 Day MEC Holidays | 2006-07-29 | 138 | 0 | 0 | 100 | 100% Complete as of Dec 7th. | 02 | EM | P60 | 02J | PI | P14 | P | PS | E | 17 | 18 | 30 | E4B4 | 02J | PI138 |  |  |  |
| EM02EPI138 | 02E Design / Issue Pipe Supports IFC | 45d | 2006-07-25 A | 2006-10-13 A | EK000PI051 FF, EM02EPI132, EM02EPI134 SS, EM02EPI135 FF | 100% |  | 2006-06-05 | 2006-08-04 |  |  |  | EBWK 5 Day MEC Holidays | 2006-07-29 | 138 | 0 | 0 | 78 | 100% Complete as of Oct. 12th. August Milestone. | 02 | EM | P60 | 02E | PI | P14 | P | PS | E |  | 32 | 15 | E4B4 | 02E | PI138 |  |  |  |
| EM02MPI135 | 02M A/G Piping Iso's - Issue IFC | 20d | 2006-07-25 A | 2006-12-22 A | EM02MPI134 SS+20d, EM02MPI134 FF, EM02MPI136, EM02MMD229 FF, EK02MPI143 SS | 100% |  | 2006-08-02 | 2006-08-29 |  |  |  | EBWK 5 Day MEC Holidays | 2006-07-29 | 135 | 0 | 0 | 10 | 100% Complete as of Dec 30th. | 02 | EM | P50 | 02M | PI | P13 | P | PS | E |  | 24 | 28 | E4B4 | 02M | PI135 |  |  |  |
| EM02MPI138 | 02M Design / Issue Pipe Supports IFC | 20d | 2006-07-25 A | 2006-12-22 A | EK000PI051 FF, EM02MPI132, EM02MPI135 FF, EM02MPI134 SS | 100% |  | 2006-08-02 | 2006-08-29 |  |  |  | EBWK 5 Day MEC Holidays | 2006-07-29 | 138 | 0 | 0 | 68 | 100% Complete as of Dec 30th. | 02 | EM | P60 | 02M | PI | P14 | P | PS | E |  | 24 | 28 | E4B4 | 02M | PI138 |  |  |  |
| EM02EPI135 | 02E A/G Piping Iso's - Issue IFC | 20d | 2006-07-25 A | 2006-10-13 A | EM02EPI134 SS+20d, EM02EPI136, EM02EMD229 FF, EK02EPI143 | 100% |  | 2006-07-25 | 2006-08-21 |  |  |  | EBWK 5 Day MEC Holidays | 2006-07-29 | 135 | 0 | 0 | 10 | 100% Complete as of Oct. 12th. August Milestone. | 02 | EM | P50 | 02E | PI | P13 | P | PS | E |  | 32 | 15 | E4B4 | 02E | PI135 |  |  |  |
| EM02CPI136 | 02C IDP - Detail Design | 2d | 2006-08-03 A | 2006-09-29 A | EM02CPI143 | 100% |  | 2006-08-03 | 2006-08-04 |  |  |  | EBWK 5 Day MEC Holidays | 2006-07-29 | 132 | 0 | 0 |  | Delays due to issues with drains and Ammonia lines. | 02 | EM | P50 | 02C | PI | P11 | P |  | E |  | 14 | 21 | E4B4 | 01A | PI132 |  |  |  |
| EM02CPI135 | 02C A/G Piping Iso's - Issue IFC | 45d | 2006-08-14 A | 2007-01-15 A | EK02CPI144 FF | 100% |  | 2006-08-21 | 2006-10-20 |  |  |  | EBWK 5 Day MEC Holidays | 2006-07-29 | 135 | 0 | 0 | 15 | 100% Complete as of Jan 13th. | 02 | EM | P50 | 02C | PI | P13 | P | PS | E | 17 | 14 | 21 | E4B4 | 02C | PI135 |  |  |  |
| EM02HPI135 | 02H A/G Piping Iso's - Issue IFC | 60d | 2006-08-14 A | 2006-12-22 A | EM02HMD229 FF, EK02HPI144 SS | 100% |  | 2006-08-22 | 2006-11-14 |  |  |  | EBWK 5 Day MEC Holidays | 2006-07-29 | 135 | 0 | 0 | 40 | 100% Complete as of Dec 30th. | 02 | EM | P50 | 02H | PI | P13 | P | PS | E | 17 | 11 | 20 | E4B4 | 02H | PI135 |  |  |  |
| EM02HPI138 | 02H Design / Issue Pipe Supports IFC | 45d | 2006-08-14 A | 2006-12-22 A | EK000PI051 FF, EM02HPI132, EM02HPI135 FF, EM02HPI134 SS | 100% |  | 2006-08-22 | 2006-10-23 |  |  |  | EBWK 5 Day MEC Holidays | 2006-07-29 | 138 | 0 | 0 | 109 | 100% Complete as of Dec 30th. | 02 | EM | P60 | 02H | PI | P14 | P | PS | E | 17 | 11 | 20 | E4B4 | 02H | PI138 |  |  |  |
| EM02KPI135 | 02K A/G Piping Iso's - Issue IFC | 30d | 2006-08-14 A | 2006-12-08 A | EM02KPI134 SS+20d, EM02KPI134 FF, EM02KMD229 FF, EK02KPI143 SS | 100% |  | 2006-08-24 | 2006-10-04 |  |  |  | EBWK 5 Day MEC Holidays | 2006-07-29 | 135 | 0 | 0 | 10 | 100% Complete as of Dec 7th. | 02 | EM | P50 | 02K | PI | P13 | P | PS | E | 17 | 19 | 17 | E4B4 | 02K | PI135 |  |  |  |
| EM02KPI138 | 02K Design / Issue Pipe Supports IFC | 30d | 2006-08-14 A | 2006-12-08 A | EK000PI051 FF, EM02KPI140, EM02KPI135 FF, EM02KPI134 SS | 100% |  | 2006-08-24 | 2006-10-04 |  |  |  | EBWK 5 Day MEC Holidays | 2006-07-29 | 138 | 0 | 0 | 94 | 100% Complete as of Dec 7th. | 02 | EM | P60 | 02K | PI | P14 | P | PS | E | 17 | 19 | 17 | E4B4 | 02K | PI138 |  |  |  |
| EM02CPI138 | 02C Design / Issue Pipe Supports IFC | 45d | 2006-08-14 A | 2007-01-15 A | EK000PI051, EM02CPI135 FF | 100% |  | 2006-08-14 | 2006-10-13 |  |  |  | EBWK 5 Day MEC Holidays | 2006-07-29 | 138 | 0 | 0 | 110 | 100% Complete as of Jan 13th. | 02 | EM | P60 | 02C | PI | P14 | P | PS | E | 17 | 14 | 21 | E4B4 | 02C | PI138 |  |  |  |
| EM02GPI134 | 02G Detail Model Development | 55d | 2006-08-15 A | 2006-09-15 A | EM02GPI132 SS, EK02GIC300 FF+3d, PK02GMJV04 FF+10d, PK02GMJV05 FF+10d, PK02GML100 FF+10d, PK000MJ22N FF+10d, PM000MD42N FF+10d, PK000MJ37T FF+10d, PK000MJ38T FF+10d, PK000MJ75N FF+10d, PK02GMJV07 FF+10d, PK02GMJV02 FF+10d, PK02GMJV10 FF+10d, ZZ1540 FF+10d, PK02GMLV01 FF+10d, PK02GMLV04 FF+10d | 100% |  | 2006-08-15 | 2006-10-30 |  |  |  | EBWK 5 Day MEC Holidays | 2006-07-29 | 134 | 9.8 | 0 |  |  | 02 | EM | P50 | 02G | PI | P08 | P |  | E |  | 9 | 22 | E4B4 | 02G | PI134 | 50 | 55 | 60 |
| EM02KPI136 | 02K IDP - Detail Design | 5d | 2006-08-21 A | 2006-09-25 A | EM02KPI134, EM02KPI142 | 100% |  | 2006-08-21 | 2006-08-25 |  |  |  | EBWK 5 Day MEC Holidays | 2006-07-29 | 132 | 0 | 0 |  |  | 02 | EM | P50 | 02K | PI | P11 | P |  | E |  | 19 | 17 | E4B4 | 01A | PI132 |  |  |  |
| EM02HPI136 | 02H IDP - Detail Design | 2d | 2006-08-22 A | 2006-09-28 A | EM02HPI143 | 100% |  | 2006-08-22 | 2006-08-23 |  |  |  | EBWK 5 Day MEC Holidays | 2006-07-29 | 132 | 0 | 0 |  |  | 02 | EM | P50 | 02H | PI | P11 | P |  | E |  | 11 | 20 | E4B4 | 01A | PI132 |  |  |  |
| EM02GPI141 | 02G Detail OP's & Services Model Review Mtg | 5d | 2006-09-11 A | 2006-09-15 A | EM02GPI134 SS, EM02GSY172 | 100% |  |  |  |  |  |  | EBWK 5 Day MEC Holidays | 2006-07-29 | 134 | 9.8 | 2.9 |  |  | 02 | EM | P20 | 02G | PI | P09 | P |  | E |  | 30 | 27 | E5B5 | 01A | PI134 | 4 | 5 | 6 |
| EM02GPI136 | 02G IDP - Detail Design | 5d | 2006-10-02 A | 2006-11-06 A | EM02GPI143 FF | 100% |  | 2006-10-09 | 2006-10-13 |  |  |  | EBWK 5 Day MEC Holidays | 2006-07-29 | 132 | 9.8 | 0.8 |  |  | 02 | EM | P50 | 02G | PI | P11 | P |  | E |  | 9 | 22 | E4B4 | 01A | PI132 | 4 | 5 | 6 |
| EM02GPI143 | 02G OP's & Serv. Model Review Comments Resolution | 5d | 2006-10-02 A | 2007-02-02 | EM02GPI141 FF |  | 5d | 2006-10-02 | 2006-10-06 | 88d | 0d | 2006-11-10 | EBWK 5 Day MEC Holidays | 2006-07-29 | 134 | 9.8 | 3.9 |  | MEC 1st Round | 02 | EM | P20 | 02G | PI | P10 | P |  | E |  | 30 | 27 | E5B5 | 01A | PI134 | 4 | 5 | 6 |
| EM02GPI135 | 02G A/G Piping Iso's - Issue IFC | 15d | 2006-10-18 A | 2006-12-22 A | EK02GPI144 SS | 100% |  | 2006-10-23 | 2006-11-13 |  |  |  | EBWK 5 Day MEC Holidays | 2006-07-29 | 135 | 9.8 | 2.1 | 20 | 100% Complete as of Jan 6th. | 02 | EM | P50 | 02G | PI | P13 | P | PS | E | 17 | 9 | 22 | E4B4 | 02G | PI135 | 35 | 40 | 45 |
| EM02GPI138 | 02G Design / Issue Pipe Supports IFC | 45d | 2006-10-18 A | 2007-01-22 A | EK000PI051 FF, EM02GPI132, EM02GPI134 SS, EM02GPI135 FF | 100% |  | 2006-10-23 | 2006-12-28 |  |  |  | EBWK 5 Day MEC Holidays | 2006-07-29 | 138 | 0 | 0 | 90 | 100% Complete as of Jan 6th. | 02 | EM | P60 | 02G | PI | P14 | P | PS | E | 17 | 9 | 22 | E4B4 | 02G | PI138 |  |  |  |

| ID | WBS | Activity | Type | Duration | Start | Finish | Predecessors | Complete | Planned start | Planned finish | zData Date | Sequence | PCA Criticality Index | PCA Duration Sensitivity | User Defined Field 1 | User Definer Field 2 | EB02 - UNIT | EB01 - RESP | EB06 - WORK OP | EB03 - AREA | EB05 - DISCIPLINE | EB10 - KEY | EB04 - CLASS | EB11 - FLAG | EB00 - EPC | EB15 - Civil / U/G Path of Construction | EB16 - Piping Path of Construction | EB17 - Suffix | user_integer2 | user_text1 |
| --- | --- | --- | --- | --- | --- | --- | --- | --- | --- | --- | --- | --- | --- | --- | --- | --- | --- | --- | --- | --- | --- | --- | --- | --- | --- | --- | --- | --- | --- | --- |
|  | PR | **Process Engineering** |  |  |  |  |  |  |  |  |  |  |  |  |  |  |  |  |  |  |  |  |  |  |  |  |  |  |  |  |
|  | SE | **Safety Engineering** |  |  |  |  |  |  |  |  |  |  |  |  |  |  |  |  |  |  |  |  |  |  |  |  |  |  |  |  |
|  | SY | **Systems Engineering** |  |  | 2006-04-18 | 2006-12-06 |  |  |  |  |  |  |  |  |  |  |  |  |  |  |  |  |  |  |  |  |  |  |  |  |
| EM02BSY172 |  | 02B P&IDs & Line List Issue - IFD | milestone | 0d | 2006-04-18 A | 2006-04-18 A | EK02BSY170 FF, EM02BPI134 FF | 100% | 2006-04-17 | 2006-04-17 | 2006-07-29 | 172 | 0 | 0 | 02B | SY172 | 02 | EM | YP0 | 02B | SY | Y3 | Y | PS | E | 34 | 34 | E4B4 |  |  |
| EM02PSY172 |  | 02P P&IDs & Line List Issue - IFD | milestone | 0d | 2006-04-19 A | 2006-04-19 A | EK02PSY170 FF, EM02PPI134 FF | 100% | 2006-04-20 | 2006-04-20 | 2006-07-29 | 172 | 0 | 0 | 02P | SY172 | 02 | EM | YP0 | 02P | SY | Y3 | Y | PS | E | 40 | 36 | E4B4 |  |  |
| EM02NSY172 |  | 02N P&IDs & Line List Issue - IFD | milestone | 0d | 2006-05-10 A | 2006-05-10 A | EK02NSY170 FF, EM02NPI134 FF+5d | 100% | 2006-05-19 | 2006-05-19 | 2006-07-29 | 172 | 0 | 0 | 02N | SY172 | 02 | EM | YP0 | 02N | SY | Y3 | Y | PS | E | 39 | 37 | E4B4 |  |  |
| EM02BSY272 |  | 02B P&IDs & Line List Issue - IFC | milestone | 0d | 2006-05-18 A | 2006-05-18 A | EM02BSY172 FF, EM02BPI135 FF+10d | 100% | 2006-05-26 | 2006-05-26 | 2006-07-29 | 172 | 0 | 0 | 02B | SY172 | 02 | EM | YP0 | 02B | SY | Y4 | Y | PS | E | 34 | 34 | E4B4 |  |  |
| EM02DSY172 |  | 02D P&IDs & Line List Issue - IFD | milestone | 0d | 2006-05-23 A | 2006-05-23 A | EK02DSY170 FF | 100% | 2006-05-24 | 2006-05-24 | 2006-07-29 | 172 | 0 | 0 | 02D | SY172 | 02 | EM | YP0 | 02D | SY | Y3 | Y | PS | E | 33 | 26 | E4B4 |  |  |
| EM02QSY172 |  | 02Q P&IDs & Line List Issue - IFD | milestone | 0d | 2006-05-26 A | 2006-05-26 A | EK02QSY170 FF, EM02QPI134 FF | 100% | 2006-06-14 | 2006-06-14 | 2006-07-29 | 172 | 0 | 0 | 02Q | SY172 | 02 | EM | YP0 | 02Q | SY | Y3 | Y | PS | E | 41 | 35 | E4B4 |  |  |
| EM02PSY272 |  | 02P P&IDs & Line List Issue - IFC | milestone | 0d | 2006-05-31 A | 2006-05-31 A | EM02PSY172 FF, EM02PPI135 FF+10d | 100% | 2006-06-05 | 2006-06-05 | 2006-07-29 | 172 | 0 | 0 | 02P | SY172 | 02 | EM | YP0 | 02P | SY | Y4 | Y | PS | E | 40 | 36 | E4B4 |  |  |
| EM02YSY172 |  | 02Y P&IDs & Line List Issue - IFD | milestone | 0d | 2006-06-02 A | 2006-06-02 A | EK02YSY170 FF | 100% | 2006-06-05 | 2006-06-05 | 2006-07-29 | 172 | 0 | 0 | 02Y | SY172 | 02 | EM | YP0 | 02Y | SY | Y3 | Y | PS | E | 8 | 9 | E4B4 |  |  |
| EM02ESY172 |  | 02E P&IDs & Line List Issue - IFD | milestone | 0d | 2006-06-07 A | 2006-06-07 A | EK02ESY170 FF | 100% | 2006-06-12 | 2006-06-12 | 2006-07-29 | 172 | 0 | 0 | 02E | SY172 | 02 | EM | YP0 | 02E | SY | Y3 | Y | PS | E | 32 | 15 | E4B4 |  |  |
| EM02JSY172 |  | 02J P&IDs & Line List Issue - IFD | milestone | 0d | 2006-06-08 A | 2006-06-08 A | EK02JSY170 FF | 100% | 2006-06-09 | 2006-06-09 | 2006-07-29 | 172 | 0 | 0 | 02J | SY172 | 02 | EM | YP0 | 02J | SY | Y3 | Y | PS | E | 18 | 30 | E4B4 |  |  |
| EM02FSY172 |  | 02F P&IDs & Line List Issue - IFD | milestone | 0d | 2006-06-15 A | 2006-06-15 A | EK02FSY170 FF | 100% | 2006-06-13 | 2006-06-13 | 2006-07-29 | 172 | 0 | 0 | 02F | SY172 | 02 | EM | YP0 | 02F | SY | Y3 | Y | PS | E | 29 | 16 | E4B4 | 0 |  |
| EM02LSY172 |  | 02L P&IDs & Line List Issue - IFD | milestone | 0d | 2006-06-19 A | 2006-06-19 A | EK02LSY170 FF | 100% |  |  | 2006-07-29 | 172 | 0 | 0 |  |  | 02 | EM | YP0 | 02L | SY | Y3 | Y | PS | E | 23 | 19 | E4B4 |  |  |
| EM02ASY172 |  | 02A P&IDs & Line List Issue - IFD | milestone | 0d | 2006-06-19 A | 2006-06-19 A | EK02ASY170 FF | 100% |  |  | 2006-07-29 | 172 | 0 | 0 | 02A | SY172 | 02 | EM | YP0 | 02A | SY | Y3 | Y | PS | E | 36 | 25 | E4B4 |  |  |
| EM02MSY172 |  | 02M P&IDs & Line List Issue - IFD | milestone | 0d | 2006-06-26 A | 2006-06-26 A | EK02MSY170 FF | 100% |  |  | 2006-07-29 | 172 | 0 | 0 | 02M | SY172 | 02 | EM | YP0 | 02M | SY | Y3 | Y | PS | E | 24 | 28 | E4B4 |  |  |
| EM02CSY172 |  | 02C P&IDs & Line List Issue - IFD | milestone | 0d | 2006-07-05 A | 2006-07-05 A | EK02CSY170 FF | 100% | 2006-06-29 | 2006-06-29 | 2006-07-29 | 172 | 0 | 0 | 02C | SY172 | 02 | EM | YP0 | 02C | SY | Y3 | Y | PS | E | 14 | 21 | E4B4 |  |  |
| EM02HSY172 |  | 02H P&IDs & Line List Issue - IFD | milestone | 0d | 2006-07-11 A | 2006-07-11 A | EK02HSY170 FF, EM02HPI134 FF | 100% | 2006-07-17 | 2006-07-17 | 2006-07-29 | 172 | 0 | 0 | 02H | SY172 | 02 | EM | YP0 | 02H | SY | Y3 | Y | PS | E | 11 | 20 | E4B4 |  |  |
| EM02NSY272 |  | 02N P&IDs & Line List Issue - IFC | milestone | 0d | 2006-07-14 A | 2006-07-14 A | EM02NSY172 FF, EM02NPI135 FF+10d | 100% |  |  | 2006-07-29 | 172 | 0 | 0 | 02N | SY172 | 02 | EM | YP0 | 02N | SY | Y4 | Y | PS | E | 39 | 37 | E4B4 |  |  |
| EM02KSY172 |  | 02K P&IDs & Line List Issue - IFD | milestone | 0d | 2006-07-17 A | 2006-07-17 A | EK02KSY170 FF | 100% |  |  | 2006-07-29 | 172 | 0 | 0 | 02K | SY172 | 02 | EM | YP0 | 02K | SY | Y3 | Y | PS | E | 19 | 17 | E4B4 |  | 12-Jul-06 |
| EM02GSY172 |  | 02G P&IDs & Line List Issue - IFD | milestone | 0d | 2006-08-02 A | 2006-08-02 A | EK02GSY170 FF | 100% | 2006-08-01 | 2006-08-01 | 2006-07-29 | 172 | 0 | 0 | 02G | SY172 | 02 | EM | YP0 | 02G | SY | Y3 | Y | PS | E | 9 | 22 | E4B4 |  |  |
| EM02DSY272 |  | 02D P&IDs & Line List Issue - IFC | milestone | 0d | 2006-08-21 A | 2006-08-21 A | EM02DSY172 FF, EM02DPI135 FF+10d | 100% | 2006-08-18 | 2006-08-18 | 2006-07-29 | 172 | 0 | 0 | 02D | SY172 | 02 | EM | YP0 | 02D | SY | Y4 | Y | PS | E | 33 | 26 | E4B4 |  | On milestone list for August. |
| EM02QSY272 |  | 02Q P&IDs & Line List Issue - IFC | milestone | 0d | 2006-08-21 A | 2006-08-21 A | EM02QSY172 FF, EM02QPI135 SF+10d | 100% | 2006-08-28 | 2006-08-28 | 2006-07-29 | 172 | 0 | 0 | 02Q | SY172 | 02 | EM | YP0 | 02Q | SY | Y4 | Y | PS | E | 41 | 35 | E4B4 |  | On milestone list for August. |
| EM02ASY272 |  | 02A P&IDs & Line List Issue - IFC | milestone | 0d | 2006-08-28 A | 2006-08-28 A | EM02ASY172 FF, EM02API135 SF+5d | 100% | 2006-09-04 | 2006-09-04 | 2006-07-29 | 172 | 0 | 0 | 02A | SY172 | 02 | EM | YP0 | 02A | SY | Y4 | Y | PS | E | 36 | 25 | E4B4 |  | On milestone list for August. |
| EM02MSY272 |  | 02M P&IDs & Line List Issue - IFC | milestone | 0d | 2006-09-21 A | 2006-09-21 A | EM02MSY172 FF, EM02MPI135 FF+5d | 100% | 2006-10-13 | 2006-10-13 | 2006-07-29 | 172 | 0 | 0 | 02M | SY172 | 02 | EM | YP0 | 02M | SY | Y4 | Y | PS | E | 24 | 28 | E4B4 |  | On milestone list for August. |
| EM02ESY272 |  | 02E P&IDs & Line List Issue - IFC | milestone | 0d | 2006-09-29 A | 2006-09-29 A | EM02ESY172 FF, EM02EPI135 FF+10d | 100% | 2006-10-20 | 2006-10-20 | 2006-07-29 | 172 | 0 | 0 | 02E | SY172 | 02 | EM | YP0 | 02E | SY | Y4 | Y | PS | E | 32 | 15 | E4B4 |  |  |
| EM02YSY272 |  | 02Y P&IDs & Line List Issue - IFC | milestone | 0d | 2006-10-03 A | 2006-10-03 A | EM02YSY172 FF, EM02YPI135 FF+10d | 100% | 2006-10-18 | 2006-10-18 | 2006-07-29 | 172 | 0 | 0 | 02Y | SY172 | 02 | EM | YP0 | 02Y | SY | Y4 | Y | PS | E | 8 | 9 | E4B4 |  |  |
| EM02JSY272 |  | 02J P&IDs & Line List Issue - IFC | milestone | 0d | 2006-10-18 A | 2006-10-18 A | EM02JSY172 FF | 100% | 2006-10-27 | 2006-10-27 | 2006-07-29 | 172 | 0 | 0 | 02J | SY172 | 02 | EM | YP0 | 02J | SY | Y4 | Y | PS | E | 18 | 30 | E4B4 |  |  |
| EM02KSY272 |  | 02K P&IDs & Line List Issue - IFC | milestone | 0d | 2006-10-18 A | 2006-10-18 A | EM02KSY172 FF | 100% | 2006-10-27 | 2006-10-27 | 2006-07-29 | 172 | 0 | 0 | 02K | SY172 | 02 | EM | YP0 | 02K | SY | Y4 | Y | PS | E | 19 | 17 | E4B4 |  |  |
| EM02LSY272 |  | 02L P&IDs & Line List Issue - IFC | milestone | 0d | 2006-10-31 A | 2006-10-31 A | EM02LSY172 FF, EM02LPI135 FS+10d | 100% | 2006-11-17 | 2006-11-17 | 2006-07-29 | 172 | 0 | 0 |  |  | 02 | EM | YP0 | 02L | SY | Y4 | Y | PS | E | 23 | 19 | E4B4 |  |  |
| EM02FSY272 |  | 02F P&IDs & Line List Issue - IFC | milestone | 0d | 2006-11-06 A | 2006-11-06 A | EM02FSY172 FF, EM02FPI135 FS+10d | 100% |  |  | 2006-07-29 | 172 | 0 | 0 | 02F | SY172 | 02 | EM | YP0 | 02F | SY | Y4 | Y | PS | E | 29 | 16 | E4B4 | 0 |  |
| EM02CSY272 |  | 02C P&IDs & Line List Issue - IFC | milestone | 0d | 2006-11-13 A | 2006-11-13 A | EM02CSY172 FF | 100% | 2007-01-12 | 2007-01-12 | 2006-07-29 | 172 | 0 | 0 | 02C | SY172 | 02 | EM | YP0 | 02C | SY | Y4 | Y | PS | E | 14 | 21 | E4B4 |  |  |
| EM02HSY272 |  | 02H P&IDs & Line List Issue - IFC | milestone | 0d | 2006-11-14 A | 2006-11-14 A | EM02HSY172 FF | 100% | 2006-12-22 | 2006-12-22 | 2006-07-29 | 172 | 0 | 0 | 02H | SY172 | 02 | EM | YP0 | 02H | SY | Y4 | Y | PS | E | 11 | 20 | E4B4 |  |  |
| EM02GSY272 |  | 02G P&IDs & Line List Issue - IFC | milestone | 0d | 2006-12-06 A | 2006-12-06 A | EM02GSY172 FF, EM02GPI135 FF+10d | 100% | 2006-12-22 | 2006-12-22 | 2006-07-29 | 172 | 0 | 0 | 02G | SY172 | 02 | EM | YP0 | 02G | SY | Y4 | Y | PS | E | 9 | 22 | E4B4 |  |  |

| ID | WBS | Activity | Duration | Start | Finish | Predecessors | Complete | Remaining | Planned start | Planned finish | Total float | Free float | Constraint | Expected finish | Calendar | zData Date | Sequence | PCA Criticality Index | PCA Duration Sensitivity | User Defined Field 1 | User Definer Field 2 | user_integer2 | EB02 - UNIT | EB01 - RESP | EB06 - WORK OP | EB03 - AREA | EB05 - DISCIPLINE | EB04 - CLASS | EB00 - EPC | EB15 - Civil / U/G Path of Construction | EB16 - Piping Path of Construction | EB17 - Suffix | EB10 - KEY | EB11 - FLAG | EB14 - RISK | Optimistic Duration | Most Likely Duration | Pessimistic Duration | EB12 - TEMP | user_integer1 |
| --- | --- | --- | --- | --- | --- | --- | --- | --- | --- | --- | --- | --- | --- | --- | --- | --- | --- | --- | --- | --- | --- | --- | --- | --- | --- | --- | --- | --- | --- | --- | --- | --- | --- | --- | --- | --- | --- | --- | --- | --- |
|  | E5B5 | **All Other Areas (MEC)** |  | 2005-03-14 | 2007-03-23 |  |  |  |  |  |  |  |  |  |  |  |  |  |  |  |  |  |  |  |  |  |  |  |  |  |  |  |  |  |  |  |  |  |  |  |
|  | E | **Engineering (MEC)** |  | 2005-03-14 | 2007-03-23 |  |  |  |  |  |  |  |  |  |  |  |  |  |  |  |  |  |  |  |  |  |  |  |  |  |  |  |  |  |  |  |  |  |  |  |
|  | 00 | **Common** |  | 2005-03-14 | 2007-03-01 |  |  |  |  |  |  |  |  |  |  |  |  |  |  |  |  |  |  |  |  |  |  |  |  |  |  |  |  |  |  |  |  |  |  |  |
|  | AR | **Architecture Engineering** |  |  |  |  |  |  |  |  |  |  |  |  |  |  |  |  |  |  |  |  |  |  |  |  |  |  |  |  |  |  |  |  |  |  |  |  |  |  |
|  | PE | **Project Engineering** |  |  |  |  |  |  |  |  |  |  |  |  |  |  |  |  |  |  |  |  |  |  |  |  |  |  |  |  |  |  |  |  |  |  |  |  |  |  |
|  | PS | **Planning & Scheduling** |  |  |  |  |  |  |  |  |  |  |  |  |  |  |  |  |  |  |  |  |  |  |  |  |  |  |  |  |  |  |  |  |  |  |  |  |  |  |
|  | QM | **Quality Mgmt.** |  |  |  |  |  |  |  |  |  |  |  |  |  |  |  |  |  |  |  |  |  |  |  |  |  |  |  |  |  |  |  |  |  |  |  |  |  |  |
|  | CE | **Chief Engineering** |  |  |  |  |  |  |  |  |  |  |  |  |  |  |  |  |  |  |  |  |  |  |  |  |  |  |  |  |  |  |  |  |  |  |  |  |  |  |
|  | CV | **Civil Engineering** |  | 2005-10-31 | 2005-11-29 |  |  |  |  |  |  |  |  |  |  |  |  |  |  |  |  |  |  |  |  |  |  |  |  |  |  |  |  |  |  |  |  |  |  |  |
| EM000CV164 |  | Issue Anchor Bolts,Rebar, & Misc. Fnd Matl. Take-Off's to OCI | 15d | 2005-10-31 A | 2005-11-29 A | EK000EB015 | 100% |  | 2005-10-31 | 2005-11-18 |  |  |  |  |  | 2006-07-29 | 164 | 0 | 0 | 02D | CV164 | 15 | 00 | EM | C30 | 000 | CV | C | E | 33 | 26 | E1B1 |  |  |  |  |  |  |  |  |
|  | EL | **Electrical Engineering** |  | 2006-05-01 | 2007-03-01 |  |  |  |  |  |  |  |  |  |  |  |  |  |  |  |  |  |  |  |  |  |  |  |  |  |  |  |  |  |  |  |  |  |  |  |
| EM000ELEH2 |  | 01,03,05 Develop & Issue Earthing / Grounding Dwgs - IFC | 62d | 2006-05-01 A | 2006-12-15 A | EM03CCV160 SS+5d, EM03DCV160 SS+5d, EM03ECV160 SS+5d, EM01BCV160 SS+5d, EM01CCV160 SS+5d, EM01DCV160 SS+5d, EM01GCV160 FF+5d, EM01JCV130 SS+5d, EK010PI011, EM01API200 FF+15d, EM01BPI200 FF+15d, EM01CPI200 FF+15d, EM01DPI200 FF+15d, EM03API200 FF+15d, EM03BPI200 FF+15d, EM03CPI200 FF+15d, EM03DPI200 FF+15d, EM03EPI200 FF+15d, EM03FPI200 FF+15d, EM05API200 FF+15d, EK010PI013 FF+15d, EK030PI012 FF+15d, EK030PI012 F1+15d, EM03BPI120 SS+46d | 100% |  | 2006-07-07 | 2006-10-02 |  |  |  |  | EBWK - Global | 2006-07-29 |  | 0 | 0 |  |  |  | 00 | EM | EH2 | 000 | EL | E | E |  |  | E5B5 | E1 | PS | 17 |  |  |  |  |  |
| EK100ELEK2 |  | 01,03,04,05 Develop & Issue Cable Ladder Plans - IFC Except 01H & 05A | 80d | 2006-07-06 A | 2006-09-29 A | EM04API120 FF+20d, EM01API200 FF+20d, EM01BPI200 FF+20d, EM01CPI200 FF, EM01DPI200 FF+20d, EM03API200 FF+20d, EM03BPI200 FF+20d, EM03CPI200 FF+20d, EM03DPI200 FF+20d, EM03EPI200 FF+20d, EM03FPI200 FF+20d, EM05API200 FF+20d, EK000ELZE0 FF+20d, EK030PI012 FF+20d, EK000ELEK1 | 100% |  | 2006-08-21 | 2006-12-08 |  |  |  |  | EBWK - Global | 2006-07-29 |  | 0.8 | 1.9 |  |  |  | 00 | EM | EK2 | 000 | EL | E | E |  |  | E5B5 | E1 | PS | 17 | 120 | 134 | 140 |  |  |
| EM000ELEK2 |  | 01,03,04,05 Develop & Issue Power Plans - IFC | 50d | 2006-07-06 A | 2006-12-28 A | EM01CPI132 FF+20d, EM03YPI132 FF+20d, EM05API132 FF+20d, EM04API120 FF+20d, EM01API200 FF+20d, EM01BPI200 FF+20d, EM01CPI200 FF+20d, EM01DPI200 FF+20d, EM03API200 FF+20d, EM03BPI200 FF+20d, EM03CPI200 FF+20d, EM03DPI200 FF+20d, EM03EPI200 FF+20d, EM03FPI200 FF+20d, EM05API200 FF+15d, EK000ELZE0 FF+20d, EK030PI012 FF+20d, EK000ELEK1 | 100% |  | 2006-08-21 | 2006-10-27 |  |  |  |  | EBWK - Global | 2006-07-29 |  | 0.8 | 1.9 |  |  |  | 00 | EM | EK2 | 000 | EL | E | E |  |  | E5B5 | E1 | PS | 17 | 120 | 134 | 140 |  |  |
| EM000ELEL2 |  | 01,03,04,05 Electrical Routing Plans | 100d | 2006-09-14 A | 2006-12-15 A | EK010PI011 | 100% |  | 2006-09-14 | 2007-01-31 |  |  |  |  | EBWK - Global | 2006-07-29 |  | 0 | 0 |  |  |  | 00 | EM | E00 | 000 | EL | E | E |  |  | E4B4 |  | WE |  |  |  |  | X |  |
| EM000ELEJ2 |  | 01,03,05 Develop & Issue Lighting Plans - IFC | 120d | 2006-10-16 A | 2006-11-30 A | EM03YPI132, EM05API132, EM03CCV127 FF+20d, EK000ELEJ1 | 100% |  | 2006-10-16 | 2007-03-30 |  |  |  |  | EBWK - Global | 2006-07-29 |  | 0 | 0 |  |  |  | 00 | EM | EJ2 | 000 | EL | E | E |  |  | E5B5 | E1 | PS | 17 |  |  |  |  |  |
| EM000ELEN3 |  | 01,03 Equipment Interconnection Diagrams | 120d | 2006-10-27 A | 2007-03-01 | EK000ELEN3 SS | 80% | 24d | 2006-10-27 | 2007-04-12 | 511d | 0d |  |  | EBWK - Global | 2006-07-29 |  | 0 | 0 |  |  |  | 00 | EM | EN3 | 000 | EL | E | E |  |  | E5B5 |  |  |  |  |  |  |  |  |
| EK200ELEK2 |  | 01H Develop & Issue Cable Ladder Plans - IFC | 80d | 2006-11-15 A | 2007-01-22 A | EM01CPI132, EM03YPI132, EM05API132, EM04API120, EM01API200 FF+20d, EM01BPI200 FF+20d, EM01CPI200 FF+20d, EM01DPI200 FF+20d, EM03API200 FF+20d, EM03BPI200 FF+20d, EM03CPI200 FF+20d, EM03DPI200 FF+20d, EM03EPI200 FF+20d, EM03FPI200 FF+20d, EM05API200 FF+20d, EK000ELZE0 FF, EK030PI012 FF+20d, EK030PI012 F1+20d, EK000ELEK1 | 100% |  | 2006-11-15 | 2007-03-06 |  |  | start on or after 2006-10-02 |  | EBWK - Global | 2006-07-29 |  | 0.8 | 1.9 |  |  |  | 00 | EM | EK2 | 000 | EL | E | E |  |  | E5B5 | E1 | PS | 17 | 120 | 134 | 140 |  |  |
| EM000ELEM2 |  | Dev/Issue Elect Cable/Raceway Sched IFC | 0d | 2006-12-04 A | 2007-01-31 A | EK200ELEK2 SS, EK020ELEM1 FF | 100% |  | 2006-12-04 | 2006-12-04 |  |  |  |  | EBWK - Global | 2006-07-29 |  | 0 | 0 |  |  |  | 00 | EM | EM2 | 000 | EL | E | E |  |  | E5B5 | E1 | PS | 17 |  |  |  |  |  |
|  | EV | **Environmental Engineering** |  |  |  |  |  |  |  |  |  |  |  |  |  |  |  |  |  |  |  |  |  |  |  |  |  |  |  |  |  |  |  |  |  |  |  |  |  |  |
|  | FP | **Fire Protection Engineering** |  |  |  |  |  |  |  |  |  |  |  |  |  |  |  |  |  |  |  |  |  |  |  |  |  |  |  |  |  |  |  |  |  |  |  |  |  |  |
|  | GE | **General Engineering (All Disciplines)** |  |  |  |  |  |  |  |  |  |  |  |  |  |  |  |  |  |  |  |  |  |  |  |  |  |  |  |  |  |  |  |  |  |  |  |  |  |  |
|  | IC | **Control Sytems Engineering** |  | 2005-11-07 | 2007-02-15 |  |  |  |  |  |  |  |  |  |  |  |  |  |  |  |  |  |  |  |  |  |  |  |  |  |  |  |  |  |  |  |  |  |  |  |
| EM020IC126 |  | Instrument Installation Details (90%) - IFC | 118d | 2005-11-07 A | 2006-05-19 A | EK000IC025 | 100% |  | 2005-11-18 | 2006-05-04 |  |  |  |  |  | 2006-07-29 |  | 0 | 0.8 |  |  | 80 | 00 | EM | ID2 | 000 | IC | I | E |  |  |  | I1 | CD | 17 | 65 | 85 | 95 |  | 65 |
| EM010IC123 |  | UNIT 01 Instr. Location Plans - IFC | 102d | 2006-05-01 A | 2006-12-08 A | EK01AIC120 FF+10d, EM01API132 FF, EK01BIC120 FF+10d, EM01BPI132 FF, EK01CIC120 FF+10d, EM01CPI132 FF, EK01DIC120 FF+10d, EM01DPI132 FF, EK01EIC120 FF+10d, EK01JIC120 FF+10d, EM01JPI132 FF, EK01YIC120 FF+10d, EM01YPI132 FF, EK030I131A FF, EK030I611A FF, EK030I616A FF, EK030I621A FF, EK030I623A FF | 100% |  | 2006-05-01 | 2006-09-19 |  |  |  |  |  | 2006-07-29 |  | 0 | 0 |  |  | 130 | 01 | EM | ID1 | 000 | IC | I | E |  |  |  | I1 | PS | 17 | 130 | 135 | 140 |  |  |
| EM020IC124 |  | UNIT 02 Instr. Location Plans - IFC | 115d | 2006-05-01 A | 2006-11-10 A | EK020I131A FF, EK02LIC120 FF+10d, EM02LPI132 FF, EK02AIC120 FF+10d, EM02API132 FF, EK02BIC120 FF+10d, EM02BPI132 FF, EK02DIC120 FF+10d, EM02DPI132 FF, EK02EIC120 FF+10d, EM02EPI132 FF, EK02FIC120 FF+10d, EM02FPI132 FF, EK02GIC120 FF+10d, EM02GPI132 FF, EK02JIC120 FF+10d, EM02JPI132 FF, EK02KIC120 FF+10d, EM02KPI140 FF, EK02MIC120 FF+10d, EM02MPI132 FF, EK02NIC120 FF+10d, EM02NPI132 FF, EK02PIC120 FF+10d, EM02PPI132 FF, EK02QIC120 FF+10d, EM02QPI132 FF, EK02YIC120 FF+10d, EM02YPI132 FF, EK02CIC120 FF+10d, EM02CPI132 FF, EK02HIC120 FF+10d, EM02HPI132 FF, EK000I623A FF, EK000I616A FF, EK000I617A FF, EK000I612A FF, EK000I621A FF | 100% |  | 2006-05-01 | 2006-10-06 |  |  |  |  |  | 2006-07-29 |  | 0 | 0 |  |  | 130 | 02 | EM | ID1 | 000 | IC | I | E |  |  |  | I1 | PS | 17 | 130 | 135 | 140 |  |  |
| EM020IC128 |  | Instrument Wiring Diagrams - IFC | 141d | 2006-05-01 A | 2006-12-18 A | EK02LIC120 FF+10d, EK03FIC120 FF+10d, EK02AIC120 FF+20d, EK02BIC120 FF+10d, EK02DIC120 FF+10d, EK02EIC120 FF+10d, EK02FIC120 FF+10d, EK02GIC120 FF+10d, EK02JIC120 FF+10d, EK02KIC120 FF+10d, EK02MIC120 FF+10d, EK02NIC120 FF+10d, EK02PIC120 FF+10d, EK02QIC120 FF+10d, EK02YIC120 FF+10d, EK03AIC120 FF+10d, EK03BIC120 FF+10d, EK03CIC120 FF+10d, EK03DIC120 FF+10d, EK03EIC120 FF+10d, EK03YIC120 FF+10d, EK01AIC120 FF+10d, EK01BIC120 FF+10d, EK01CIC120 FF+10d, EK01DIC120 FF+10d, EK01EIC120 FF+10d, EK01JIC120 FF+10d, EK04AIC120 FF, EK05AIC120 FF+10d, EK01YIC120 FF+10d, EK02CIC120 FF+10d, EK02HIC120 FF+10d, EM02ASY272 FF, EM020IC127 FF | 100% |  | 2006-05-01 | 2006-11-13 |  |  |  |  |  | 2006-07-29 |  | 0 | 4.5 |  |  | 70 | 00 | EM | ID3 | 000 | IC | I | E |  |  |  | I1 | PS | 17 | 135 | 141 | 150 |  |  |
| EM030IC125 |  | UNIT 03 Instr. Location Plans - IFC | 143d | 2006-05-01 A | 2006-11-22 A | EK03FIC120 FF+10d, EM03FPI132 FF+20d, EK03AIC120 FF+10d, EM03API132 FF, EK03BIC120 FF+10d, EM03BPI132 FF, EK03CIC120 FF+10d, EM03CPI132 FF, EK03DIC120 FF+10d, EM03DPI132 FF+20d, EK03EIC120 FF+10d, EM03EPI132 FF+20d, EK03YIC120 FF+10d, EM03YPI132 FF, EK030I131A FF, EK030I611A FF, EK030I616A FF, EK030I621A FF, EK030I623A FF | 100% |  | 2006-05-01 | 2006-11-15 |  |  |  |  |  | 2006-07-29 |  | 0 | 0 |  |  | 130 | 03 | EM | ID1 | 000 | IC | I | E |  |  |  | I1 | PS | 17 | 130 | 135 | 140 |  |  |
| EM050IC130 |  | 05B Instr. Location Plans - IFC | 135d | 2006-05-01 A | 2007-02-15 | EK05AIC120 FF+10d, EK030I131A FF, EK030I611A FF, EK030I616A FF, EK030I621A FF, EK030I623A FF | 90% | 14d | 2006-05-01 | 2006-11-03 | 166d | 0d |  | 2007-02-15 |  | 2006-07-29 |  | 0 | 0.3 |  |  | 130 | 05 | EM | ID1 | 05B | IC | I | E |  |  |  | I1 | PS | 17 | 130 | 135 | 140 |  |  |
| EM020IC127 |  | Instrument Installation Details (10%) - IFC | 40d | 2006-06-19 A | 2006-07-17 A | EM020IC126 FF+2d, PK02LMC23 FF | 100% |  | 2006-06-19 | 2006-08-11 |  |  |  |  | EBWK 5 Day MEC Holidays | 2006-07-29 |  | 0 | 0.8 |  |  | 80 | 00 | EM | ID2 | 000 | IC | I | E |  |  |  | I1 | PS | 17 | 65 | 85 | 95 |  | 65 |
| EM020IC132 |  | Traditional J-boxes Wiring Reports - IFC | 39d | 2006-06-19 A | 2006-08-07 A | EM020IC128 SS+23d | 100% |  | 2006-06-19 | 2006-08-10 |  |  |  |  |  | 2006-07-29 |  | 0 | 0 |  |  | 70 | 00 | EM | ID3 | 000 | IC | I | E |  |  |  | I1 | PS | 17 | 135 | 141 | 150 |  |  |
| EK020IC131 |  | Instrument Loop Diagrams FF - IFC | 79d | 2006-07-03 A | 2007-02-02 | EK02LIC120 FF+10d, EK03FIC120 FF+10d, EK02AIC120 FF+10d, EK02BIC120 FF+10d, EK02DIC120 FF+10d, EK02EIC120 FF+10d, EK02FIC120 FF+10d, EK02GIC120 FF+10d, EK02JIC120 FF+10d, EK02KIC120 FF+10d, EK02MIC120 FF+10d, EK02NIC120 FF+10d, EK02PIC120 FF+10d, EK02QIC120 FF+10d, EK02YIC120 FF+10d, EK03AIC120 FF+10d, EK03BIC120 FF+10d, EK03CIC120 FF+10d, EK03DIC120 FF+10d, EK03EIC120 FF+10d, EK03YIC120 FF+10d, EK01AIC120 FF+10d, EK01BIC120 FF+10d, EK01CIC120 FF+10d, EK01DIC120 FF+10d, EK01EIC120 FF+10d, EK01HIC120 FF+5d, EK01JIC120 FF+10d, EK04AIC120 FF, EK05AIC120 FF+10d, EK01YIC120 FF+10d, EK02CIC120 FF+10d, EK02HIC120 FF+10d | 94% | 5d | 2006-07-03 | 2006-10-19 | 530d | 15d |  |  |  | 2006-07-29 |  | 0 | 0 |  |  | 90 | 00 | EK | ID4 | 000 | IC | I | E |  |  |  | I1 | PS | 17 |  |  |  |  |  |
| EM020IC134 |  | DCS Marshalling Report - IFC | 43d | 2006-07-03 A | 2006-08-07 A | EM020IC128 SS+23d | 100% |  | 2006-07-03 | 2006-08-30 |  |  |  |  |  | 2006-07-29 |  | 0 | 0 |  |  | 70 | 00 | EM | ID3 | 000 | IC | I | E |  |  |  | I1 | PS | 17 | 135 | 141 | 150 |  |  |
| EM020IC135 |  | SIS Termination Report - IFC | 45d | 2006-07-03 A | 2006-09-29 A | EM020IC128 SS+44d | 100% |  | 2006-07-03 | 2006-09-01 |  |  |  |  |  | 2006-07-29 |  | 0 | 0 |  |  | 70 | 00 | EM | ID3 | 000 | IC | I | E |  |  |  | I1 | PS | 17 | 135 | 141 | 150 |  |  |
| EM020IC136 |  | ITCC Termination Report - IFC | 45d | 2006-07-03 A | 2006-09-04 A | EM020IC128 SS+44d | 100% |  | 2006-07-03 | 2006-09-01 |  |  |  |  |  | 2006-07-29 |  | 0 | 0 |  |  | 70 | 00 | EM | ID3 | 000 | IC | I | E |  |  |  | I1 | PS | 17 | 135 | 141 | 150 |  |  |
| EM020IC137 |  | Miscellaneous Wiring Report - IFC | 107d | 2006-07-03 A | 2006-10-30 A | EM020IC128 SS+23d | 100% |  | 2006-07-03 | 2006-11-28 |  |  |  |  |  | 2006-07-29 |  | 0 | 0 |  |  | 70 | 00 | EM | ID3 | 000 | IC | I | E |  |  |  | I1 | PS | 17 | 135 | 141 | 150 |  |  |
| EM020IC129 |  | Instrument Loop Diagrams - IFC | 79d | 2006-08-15 A | 2007-01-15 A | EK02LIC120 FF+10d, EK03FIC120 FF+10d, EK02AIC120 FF+10d, EK02BIC120 FF+10d, EK02DIC120 FF+10d, EK02EIC120 FF+10d, EK02FIC120 FF+10d, EK02GIC120 FF+10d, EK02JIC120 FF+10d, EK02KIC120 FF+10d, EK02MIC120 FF+10d, EK02NIC120 FF+10d, EK02PIC120 FF+10d, EK02QIC120 FF+10d, EK02YIC120 FF+10d, EK03AIC120 FF+10d, EK03BIC120 FF+10d, EK03CIC120 FF+10d, EK03DIC120 FF+10d, EK03EIC120 FF+10d, EK03YIC120 FF+10d, EK01AIC120 FF+10d, EK01BIC120 FF+10d, EK01CIC120 FF+10d, EK01DIC120 FF+10d, EK01EIC120 FF+10d, EK01HIC120 FF+9d, EK01JIC120 FF+10d, EK04AIC120 FF+10d, EK05AIC120 FF+10d, EK01YIC120 FF+10d, EK02CIC120 FF+10d, EK02HIC120 FF+10d | 100% |  | 2006-08-15 | 2006-12-01 |  |  |  |  |  | 2006-07-29 |  | 0 | 0 |  |  | 90 | 00 | EM | ID4 | 000 | IC | I | E |  |  |  | I1 | PS | 17 |  |  |  |  |  |
| EM000IC100 |  | Instrument Index - IFC | 25d | 2006-09-04 A | 2007-02-05 | EM020IC128 SS+5d, EM02BSY272, EM02PSY272 FF+5d, EM02QSY272 FF+5d, EM01JSY272 FF+5d, EM01YSY272 FF+5d, EM02ASY272 FF+5d, EM03CSY272 FF+5d, EM02NSY272 FF+5d, EM02ESY272 FF+5d, EM01BSY272 FF+5d, EM02MSY272 FF+5d, EM02DSY272 FF+5d, EM01ASY272 FF+5d, EM02FSY272 FF+5d, EM02KSY272 FF+5d, EM02LSY272 FF+5d, EM03DSY272 FF+5d, EM02YSY272 FF+5d, EM02JSY272 FF+5d, EM03ASY272 FF+5d, EM03YSY272 FF+5d, EM5ASY272 FF, EM01DSY272 FF+5d, EM03FSY272 FF+5d, EM02CSY272 FF, EM03BSY272 FF+5d, EM02GSY272 FF, EM020IC127 FF+5d, EM010IC123 SS, EM020IC124 FF, EM030IC125 FF, EM050IC130 SS, EM020IC132 FF+5d, EK020IC133 SS+5d, EM020IC134 FF+5d, EM020IC135 FF+5d, EM020IC136 FF+5d, EM020IC137 FF+5d | 100% | 0d | 2006-09-07 | 2006-10-11 | 530d | 85d |  |  |  | 2006-07-29 |  | 0 | 0 |  |  | 90 | 00 | EM | ID5 | 000 | IC | I | E |  |  |  | I1 | PS |  | 104 | 124 | 144 |  |  |
| EK020IC133 |  | Field Bus J-boxes Wiring Reports - IFC | 80d | 2006-09-04 A | 2006-12-22 A | EM020IC128 SS+86d | 100% |  |  |  |  |  |  |  |  | 2006-07-29 |  | 0 | 0 |  |  | 70 | 00 | EK | ID3 | 000 | IC | I | E |  |  |  | I1 | PS | 17 | 135 | 141 | 150 |  |  |

Notes:
- EM000ELEH2: user_text1: Already issued: 02,03,05A,01A,01B,01C,01D,01G & 01Y some w/holds.
- EM000ELEL2: user_text1: Already issued: All unit 02 & 03, 01A issued 19 July. 01B, 01D Issued on 24 July.
- EM050IC130: user_text1: 05B Instrument Detail Model / Review
- EM020IC135: user_text1: 95% complete. Main plant in progress.
- EM000IC100: user_text1: Can not make Date Forecast due to Late Area(s) (02, 03 & 05)

| ID | WBS | Activity | Duration | Start | Finish | Predecessors | Complete | Planned start | Planned finish | zData Date | PCA Criticality Index | PCA Duration Sensitivity | Discipl1ne Gorgon | EB02 - UNIT | EB01 - RESP | EB06 - WORK OP | EB03 - AREA | EB05 - DISCIPLINE | EB04 - CLASS | EB11 - FLAG | EB00 - EPC | EB17 - Suffix | EB07 - REQN | EB10 - KEY | EB09 - IPMS |
| --- | --- | --- | --- | --- | --- | --- | --- | --- | --- | --- | --- | --- | --- | --- | --- | --- | --- | --- | --- | --- | --- | --- | --- | --- | --- |
|  | MB | **Furnaces & Flares Engineering** |  |  |  |  |  |  |  |  |  |  |  |  |  |  |  |  |  |  |  |  |  |  |  |
|  | MC | **Exchangers Engineering** |  | 2006-02-13 | 2006-09-11 |  |  |  |  |  |  |  |  |  |  |  |  |  |  |  |  |  |  |  |  |
| EM000MCG10 |  | GEN and ADMINISTRATIVE | 65d | 2006-02-13 A | 2006-09-11 A | EK000YA002 SS, EK000MC23P FS+14d | 100% | 2006-05-15 | 2006-08-11 | 2006-07-29 | 0 | 0 | G10 | 00 | EM | G10 | 000 | MC | MC | WE | E | E4B4 |  |  |  |
|  | MD | **Vessels Engineering** |  | 2005-03-14 | 2005-12-13 |  |  |  |  |  |  |  |  |  |  |  |  |  |  |  |  |  |  |  |  |
| EM000MD42C |  | Prepare & Issue Prelim. RFQ - MD402 to Proc. | 5d | 2005-03-14 A | 2005-03-18 A | EK000YA002 SS | 100% |  |  | 2006-07-29 | 0 | 0 |  | 00 | EM | MD4 | 000 | MD | M | X | E | E4B4 | MD402 | CE | A |
| EM000MD22C |  | Prepare & Issue Prelim. RFQ - MD202 to Proc. | 5d | 2005-03-28 A | 2005-03-30 A | EK000MD33C | 100% | 2005-03-28 | 2005-04-01 | 2006-07-29 | 0 | 0 |  | 00 | EM | MD2 | 000 | MD | M | X | E | E4B4 | MD202 | FE | A |
| EM000MD44C |  | Prepare & Issue Prelim. RFQ - MD404 to Proc. | 5d | 2005-03-28 A | 2005-03-30 A | EM000MD22C SS | 100% | 2005-03-28 | 2005-04-01 | 2006-07-29 | 0 | 0 |  | 00 | EM | MD4 | 000 | MD | M | X | E | E4B4 | MD404 | NE | A |
| EM000MD46C |  | Prepare & Issue Prelim. RFQ - MD411 to Proc. | 5d | 2005-03-28 A | 2005-03-30 A | EM000MD22C SS | 100% | 2005-03-28 | 2005-04-01 | 2006-07-29 | 0 | 0 |  | 00 | EM | MD4 | 000 | MD | M | X | E | E4B4 | MD411 | PE | A |
| EM00MD45C |  | Prepare & Issue Prelim. RFQ - MD405 to Proc. | 5d | 2005-03-28 A | 2005-03-30 A | EM000MD22C SS | 100% | 2005-03-28 | 2005-04-01 | 2006-07-29 | 0 | 0 |  | 00 | EM | MD4 | 000 | MD | M | X | E | E4B4 | MD405 | CE | A |
| EM000MD22D |  | Technical Evaluation - MD202 | 5d | 2005-04-22 A | 2005-05-19 A | PK000MD22H | 100% | 2005-04-25 | 2005-04-29 | 2006-07-29 | 0 | 0 |  | 00 | EM | MD2 | 000 | MD | M | X | E | E4B4 | MD202 | FE | D |
| EM000MD42D |  | Technical Evaluation - MD402 | 5d | 2005-04-22 A | 2005-05-19 A | PK000MD42H | 100% | 2005-04-25 | 2005-04-29 | 2006-07-29 | 0 | 0 |  | 00 | EM | MD4 | 000 | MD | M | X | E | E4B4 | MD402 | CE | D |
| EM000MD44D |  | Technical Evaluation - MD404 | 5d | 2005-04-22 A | 2005-05-19 A | PK000MD44H | 100% | 2005-04-25 | 2005-04-29 | 2006-07-29 | 0 | 0 |  | 00 | EM | MD4 | 000 | MD | M | X | E | E4B4 | MD404 | NE | D |
| EM000MD46D |  | Technical Evaluation - MD411 | 5d | 2005-04-22 A | 2005-05-20 A | PK000MD46H | 100% | 2005-04-25 | 2005-04-29 | 2006-07-29 | 0 | 0 |  | 00 | EM | MD4 | 000 | MD | M | X | E | E4B4 | MD411 | PE | D |
| EM000MD45D |  | Technical Evaluation - MD405 | 5d | 2005-04-25 A | 2005-05-19 A | PK000MD45H | 100% | 2005-04-25 | 2005-04-29 | 2006-07-29 | 0 | 0 |  | 00 | EM | MD4 | 000 | MD | M | X | E | E4B4 | MD405 | CE | D |
| EM000MD47F |  | Develop & Issue Inquiry for ERW - MD406 | 10d | 2005-05-27 A | 2005-06-10 A | EK000MD47B, EK000MD47P | 100% |  |  | 2006-07-29 | 0 | 0 |  | 00 | EM | MD4 | 000 | MD | M | X | E | E4B4 | MD406 | CE | A |
| EM000MD42E |  | Prepare & Issue Purchase ERW - MD402 | 3d | 2005-06-01 A | 2005-06-03 A | EM000MD42D, EK000MD42F, PK000MD42I FF, PK000MD42M | 100% | 2005-06-28 | 2005-06-30 | 2006-07-29 | 0 | 0 |  | 00 | EM | MD4 | 000 | MD | M | X | E | E4B4 | MD402 | CE | F |
| EM000MD44E |  | Prepare & Issue Purchase ERW - MD404 | 3d | 2005-07-04 A | 2005-07-06 A | EM000MD44D, PK000MD44I, EK000MD44F S1 | 100% | 2005-07-26 | 2005-07-28 | 2006-07-29 | 0 | 0 |  | 00 | EM | MD4 | 000 | MD | M | X | E | E4B4 | MD404 | NE | F |
| EM000MD45E |  | Prepare & Issue Purchase ERW - MD405 | 3d | 2005-07-04 A | 2005-07-06 A | EM000MD45D, PK000MD45I FF, EK000MD45F S1 | 100% | 2005-07-26 | 2005-07-28 | 2006-07-29 | 0 | 0 |  | 00 | EM | MD4 | 000 | MD | M | X | E | E4B4 | MD405 | CE | F |
| EM000MD46E |  | Prepare & Issue Purchase ERW - MD411 | 3d | 2005-07-04 A | 2005-07-06 A | EM000MD46D, EK000MD46F, PK000MD46I FF | 100% | 2005-07-19 | 2005-07-21 | 2006-07-29 | 0 | 0 |  | 00 | EM | MD4 | 000 | MD | M | X | E | E4B4 | MD411 | PE | F |
| EM000MD22E |  | Prepare & Issue Purchase ERW - MD202 | 3d | 2005-07-11 A | 2005-07-14 A | EM000MD22D, PK000MD22I FF, EK000MD22F S1 | 100% | 2005-08-02 | 2005-08-04 | 2006-07-29 | 0 | 0 |  | 00 | EM | MD2 | 000 | MD | M | X | E | E4B4 | MD202 | FE | F |
| EM000MD47D |  | Technical Evaluation - MD406 | 5d | 2005-08-01 A | 2005-08-05 A | PK000MD47H | 100% |  |  | 2006-07-29 | 0 | 0 |  | 00 | EM | MD4 | 000 | MD | M | X | E | E4B4 | MD406 | CE | D |
| EM000MD47E |  | Prepare & Issue Purchase ERW - MD406 | 4d | 2005-09-15 A | 2005-09-20 A | EM000MD47D, EM000MD47F, PK000MD47I FF | 100% |  |  | 2006-07-29 | 0 | 0 |  | 00 | EM | MD4 | 000 | MD | M | X | E | E4B4 | MD406 | CE | F |
| PM000MD22N |  | Recv. Planning V. Data MD202 | 20d | 2005-09-16 A | 2005-12-13 A | PK000MD22J | 100% | 2005-10-17 | 2005-11-11 | 2006-07-29 | 0 | 0 |  | 00 | EM | MD2 | 000 | MD | M |  | E |  | MD202 | P15 | J |
| PM000MD42N |  | Recv. Planning V. Data MD402 | 20d | 2005-09-16 A | 2005-11-18 A | PK000MD42J | 100% | 2005-09-26 | 2005-10-21 | 2006-07-29 | 0 | 0 |  | 00 | EM | MD4 | 000 | MD | M |  | E |  | MD402 | P15 | J |
| PM000MD45N |  | Recv. Planning V. Data MD405 | 20d | 2005-09-16 A | 2005-10-03 A | PK000MD45J | 100% | 2005-09-26 | 2005-10-21 | 2006-07-29 | 0 | 0 |  | 00 | EM | MD4 | 000 | MD | M |  | E |  | MD405 | P15 | J |
| PM000MD46N |  | Recv. Planning V. Data MD411 | 20d | 2005-09-26 A | 2005-10-14 A | PK000MD46J | 100% | 2005-09-26 | 2005-10-21 | 2006-07-29 | 0 | 0 |  | 00 | EM | MD4 | 000 | MD | M |  | E |  | MD411 | P15 | J |
| PM000MD44N |  | Recv. Planning V. Data MD404 | 20d | 2005-10-17 A | 2005-10-31 A | PK000MD44J | 100% | 2005-10-17 | 2005-11-11 | 2006-07-29 | 0 | 0 |  | 00 | EM | MD4 | 000 | MD | M |  | E |  | MD404 | P15 | J |
| PM000MD47N |  | Recv. Planning V. Data MD406 | 20d | 2005-10-24 A | 2005-11-09 A | PK000MD47J FS+10d | 100% | 2005-11-09 | 2005-12-06 | 2006-07-29 | 0 | 0 |  | 00 | EM | MD4 | 000 | MD | M |  | E |  | MD406 | P15 | J |

Notes:
- EM000MD42C: P3 Activity Log Info: Utilize FMCL as Basis for ERW's
- EM000MD22C: P3 Activity Log Info: Utilize FMCL as Basis for ERW's / MEC Scope
- EM000MD44C: P3 Activity Log Info: Utilize FMCL as Basis for ERW's / MEC Scope
- EM000MD46C: P3 Activity Log Info: Utilize FMCL as Basis for ERW's / MEC Scope
- EM00MD45C: P3 Activity Log Info: Utilize FMCL as Basis for ERW's / MEC Scope

| ID | WBS | Activity | Type | Duration | Start | Finish | Predecessors | Complete | Planned start | Planned finish | Constraint | Calendar | zData Date | PCA Criticality Index | PCA Duration Sensitivity | EB02 - UNIT | EB01 - RESP | EB06 - WORK OP | EB03 - AREA | EB05 - DISCIPLINE | EB10 - KEY | EB04 - CLASS | EB11 - FLAG | EB00 - EPC | EB17 - Suffix | EB15 - Civil / U/G Path of Construction | EB16 - Piping Path of Construction | Sequence | User Defined Field 1 | User Definer Field 2 | user_integer2 | user_text1 | EB14 - RISK | EB12 - TEMP | Optimistic Duration | Most Likely Duration | Pessimistic Duration |
| --- | --- | --- | --- | --- | --- | --- | --- | --- | --- | --- | --- | --- | --- | --- | --- | --- | --- | --- | --- | --- | --- | --- | --- | --- | --- | --- | --- | --- | --- | --- | --- | --- | --- | --- | --- | --- | --- |
|  | MJ | **Machinery Engineering** |  |  |  |  |  |  |  |  |  |  |  |  |  |  |  |  |  |  |  |  |  |  |  |  |  |  |  |  |  |  |  |  |  |  |  |
|  | PI | **Piping Engineering** |  |  | 2005-03-21 | 2005-11-15 |  |  |  |  |  |  |  |  |  |  |  |  |  |  |  |  |  |  |  |  |  |  |  |  |  |  |  |  |  |  |  |
| EM000PI025 |  | Develop Piping Specs (PDS) |  | 75d | 2005-03-21 A | 2005-08-22 A | EK000PI020 SS, EK000PI105 | 100% | 2005-03-21 | 2005-07-01 |  | EBWK 5 Day MEC Holidays | 2006-07-29 | 0 | 0 | 00 | EM | P30 | 000 | PI | P20 | P | X | E | E5B5 |  |  |  |  |  |  |  |  |  |  |  |  |
| EM000U000 |  | Start U/G Model Reviews | milestone | 0d | 2005-11-15 A | 2005-11-15 A | EK020SY080 | 100% |  |  |  | EBWK 5 Day MEC Holidays | 2006-07-29 | 0 | 0 | 00 | EM | U20 | 000 | PI | P03 | U |  | E | E2B2 | 2 | 2 |  |  |  |  |  |  |  |  |  |  |
|  | PR | **Process Engineering** |  |  |  |  |  |  |  |  |  |  |  |  |  |  |  |  |  |  |  |  |  |  |  |  |  |  |  |  |  |  |  |  |  |  |  |
|  | SE | **Safety Engineering** |  |  |  |  |  |  |  |  |  |  |  |  |  |  |  |  |  |  |  |  |  |  |  |  |  |  |  |  |  |  |  |  |  |  |  |
|  | SY | **Systems Engineering** |  |  |  |  |  |  |  |  |  |  |  |  |  |  |  |  |  |  |  |  |  |  |  |  |  |  |  |  |  |  |  |  |  |  |  |
|  | 01 | **Offsites** |  |  | 2005-07-15 | 2007-01-29 |  |  |  |  |  |  |  |  |  |  |  |  |  |  |  |  |  |  |  |  |  |  |  |  |  |  |  |  |  |  |  |
|  | AR | **Architecture Engineering** |  |  |  |  |  |  |  |  |  |  |  |  |  |  |  |  |  |  |  |  |  |  |  |  |  |  |  |  |  |  |  |  |  |  |  |
|  | PE | **Project Engineering** |  |  |  |  |  |  |  |  |  |  |  |  |  |  |  |  |  |  |  |  |  |  |  |  |  |  |  |  |  |  |  |  |  |  |  |
|  | PS | **Planning & Scheduling** |  |  |  |  |  |  |  |  |  |  |  |  |  |  |  |  |  |  |  |  |  |  |  |  |  |  |  |  |  |  |  |  |  |  |  |
|  | QM | **Quality Mgmt.** |  |  |  |  |  |  |  |  |  |  |  |  |  |  |  |  |  |  |  |  |  |  |  |  |  |  |  |  |  |  |  |  |  |  |  |
|  | CE | **Chief Engineering** |  |  |  |  |  |  |  |  |  |  |  |  |  |  |  |  |  |  |  |  |  |  |  |  |  |  |  |  |  |  |  |  |  |  |  |
|  | CV | **Civil Engineering** |  |  | 2005-10-03 | 2007-01-26 |  |  |  |  |  |  |  |  |  |  |  |  |  |  |  |  |  |  |  |  |  |  |  |  |  |  |  |  |  |  |  |
| EM01DCV110 |  | 01D Design & Model Cooling Tower Basin |  | 30d | 2005-10-03 A | 2005-12-21 A | EM01DPI120 SS | 100% | 2005-10-03 | 2005-11-11 |  |  | 2006-07-29 | 0 | 0 | 01 | EM | C20 | 01D | CV | C3 | C |  | E | E5B5 | 10 | 31 | 160 | 01B | CV160 |  |  |  |  |  |  |  |
| EM01DCV120 |  | 01D Design & Model Structural Steel Sleepers |  | 50d | 2005-10-03 A | 2006-03-03 A | EM01DPI120 SS | 100% | 2005-10-03 | 2005-12-09 |  |  | 2006-07-29 | 0 | 0 | 01 | EM | S10 | 01D | CV | C2 | S |  | E | E5B5 | 10 | 31 | 120 | 01D | CV120 |  |  |  |  |  |  |  |
| EM01DCV160 |  | 01D Design & Model Major Eq. Fdns |  | 45d | 2005-10-03 A | 2006-03-03 A | EM01DPI120 SS | 100% | 2005-10-03 | 2005-12-02 |  |  | 2006-07-29 | 0 | 0 | 01 | EM | C30 | 01D | CV | C3 | C |  | E | E5B5 | 10 | 31 | 160 | 01D | CV160 |  |  |  |  |  |  |  |
| EM01GCV160 |  | 01G Design & Model Control Building Fdns |  | 30d | 2005-10-21 A | 2006-01-09 A | EK000YA002 | 100% | 2005-10-21 | 2005-12-01 |  |  | 2006-07-29 | 0 | 0 | 01 | EM | C20 | 01F | CV | C3 | C |  | E | E5B5 | 6 | 6 | 160 | 01G | CV160 |  |  |  |  |  |  |  |
| EM01DCV130 |  | 01D Design & Model S/S Sleeper Fdns |  | 35d | 2005-10-25 A | 2006-03-03 A | EM01DPI120 SS+5d | 100% | 2005-10-25 | 2005-12-12 |  |  | 2006-07-29 | 0 | 0 | 01 | EM | C40 | 01D | CV | C3 | C |  | E | E5B5 | 10 | 31 | 125 | 01D | CV125 |  |  |  |  |  |  |  |
| EM01BCV120 |  | 01B Design & Model Structural Steel Sleepers |  | 25d | 2005-11-08 A | 2006-03-17 A | EM01BPI120 SS+10d | 100% | 2005-11-08 | 2005-12-12 |  |  | 2006-07-29 | 0 | 0 | 01 | EM | S10 | 01B | CV | C2 | S |  | E | E5B5 | 16 | 18 | 125 | 01B | CV125 |  |  |  |  |  |  |  |
| EM01BCV130 |  | 01B Design & Model S/S Sleeper Fdns |  | 20d | 2005-11-08 A | 2006-03-17 A | EM01BPI120 SS+5d | 100% | 2005-11-08 | 2005-12-05 |  |  | 2006-07-29 | 0 | 0 | 01 | EM | C40 | 01B | CV | C3 | C |  | E | E5B5 | 16 | 18 | 125 | 01B | CV125 |  |  |  |  |  |  |  |
| EM01BCV160 |  | 01B Design & Model Major Eq. Fdns |  | 20d | 2005-11-08 A | 2006-03-17 A | EM01BPI120 SS | 100% | 2005-11-08 | 2005-12-05 |  |  | 2006-07-29 | 0 | 0 | 01 | EM | C30 | 01B | CV | C3 | C |  | E | E5B5 | 16 | 18 | 160 | 01B | CV160 |  |  |  |  |  |  |  |
| EM01YCV130 |  | 01Y Design & Model Structural Piperack Fdns |  | 29d | 2006-01-03 A | 2006-03-17 A | EM01YPI120 FF+14d | 100% | 2006-01-03 | 2006-02-10 |  |  | 2006-07-29 | 0 | 0 | 01 | EM | C40 | 01Y | CV | C3 | C |  | E | E5B5 | 17 | 10 | 125 | 01Y | CV125 |  |  |  |  |  |  |  |
| EM01YCV120 |  | 01Y Design & Model Structural Steel Piperack |  | 29d | 2006-01-05 A | 2006-03-17 A | EM01YPI120 FF+14d | 100% | 2006-01-05 | 2006-02-14 |  |  | 2006-07-29 | 0 | 0 | 01 | EM | S10 | 01Y | CV | C2 | S |  | E | E5B5 | 17 | 10 | 125 | 01Y | CV125 |  |  |  |  |  |  |  |
| EM01DCV113 |  | 01D Update Model CT Basin & Issue Dwgs-IFC |  | 30d | 2006-03-03 A | 2006-04-21 A | EM01DCV110, EK000CV045 SS+15d, EM01DPI200 FF+10d | 100% | 2006-04-05 | 2006-05-16 |  |  | 2006-07-29 | 0 | 0 | 01 | EM | C20 | 01D | CV | C5 | C |  | E | E5B5 | 10 | 31 | 164 | 01B | CV164 | 15 | Issue IFC Early | 17 |  |  |  |  |
| EM01GCV164 |  | 01G Update Model Control Bldg Fdns & Issue Dwgs-IFC |  | 21d | 2006-03-06 A | 2006-03-27 A | EM01GCV160 FF, PK000MU21N FF+15d | 100% | 2006-03-13 | 2006-04-10 |  |  | 2006-07-29 | 0 | 0 | 01 | EM | C20 | 01G | CV | C5 | C |  | E | E5B5 | 6 | 6 | 164 | 01G | CV164 | 15 |  | 17 | L1 |  |  |  |
| EM01CCV160 |  | 01C Design & Model Major Eq. Fdns (Excluding EDR) |  | 20d | 2006-03-13 A | 2006-10-31 A | EM01CPI120 SS | 100% | 2006-03-13 | 2006-04-07 |  |  | 2006-07-29 | 0 | 0 | 01 | EM | C30 | 01C | CV | C3 | C |  | E | E5B5 | 21 | 24 | 160 | 01C | CV160 |  |  |  |  |  |  |  |
| EM01BCV226 |  | 01B Issue Fdn IFC- 2001-FA/FB (Water Storage Tanks) |  | 15d | 2006-03-27 A | 2006-05-30 A | EM01BPI200 SS+10d, PK01BMF01 FF+5d | 100% | 2006-04-10 | 2006-04-28 |  |  | 2006-07-29 | 0 | 0 | 01 | EM | C30 | 01B | CV | C5 | C | PS | E | E5B5 | 16 | 18 | 160 | 01B | CV160 |  |  |  | Y |  |  |  |
| EM01DCV164 |  | 01D Update Model Major Eq. Fdns & Issue Dwgs-IFC |  | 25d | 2006-04-25 A | 2006-05-12 A | EM01DCV160 FF+15d, EM01DPI132, EK000CV045, EM01DPI200 FF+10d, EM01UPISSF FF+10d, EM01UPIFWF FF+10d, EM01UPIWWF FF+10d, PK000MU61N FF+15d, PK01DMJV01 FF+10d, PK01DMUV02 FF+10d, PK01DMUV05 FF+10d, PK01DMUV08 FF+10d | 100% | 2006-06-02 | 2006-07-06 |  |  | 2006-07-29 | 0.6 | 2.5 | 01 | EM | C30 | 01D | CV | C5 | C |  | E | E5B5 | 10 | 31 | 164 | 01D | CV164 | 15 |  | 17 |  | 20 | 25 | 30 |
| EM01JCV120 |  | 01J Design & Model Metering Enclosure |  | 27d | 2006-05-01 A | 2006-05-10 A | EM01JPI120 SS+1d | 100% | 2006-05-15 | 2006-06-20 |  |  | 2006-07-29 | 0 | 0 | 01 | EM | S10 | 01J | CV | C2 | S |  | E | E5B5 | 37 | 11 | 160 | 01J | CV160 |  |  |  |  |  |  |  |
| EM01JCV130 |  | 01J Design & Model Metering Enclosure Fdns |  | 20d | 2006-05-01 A | 2006-05-10 A | EM01JPI120 SS | 100% | 2006-05-12 | 2006-06-08 |  |  | 2006-07-29 | 0 | 0 | 01 | EM | C40 | 01J | CV | C3 | C |  | E | E5B5 | 37 | 11 | 160 | 01J | CV160 |  |  |  |  |  |  |  |
| EM01YCV122 |  | 01Y Update Model S/S Piperack & Issue Dwgs - IFC |  | 15d | 2006-05-04 A | 2006-07-14 A | EM01YPI132, EM01YCV120, EM01YPI136 FF+15d, EM01UPISSF FF+15d, EM01UPIFWF FF+15d, EM01UPIWWF FF+15d, EK010PI013 FF+15d | 100% | 2006-06-08 | 2006-06-28 |  |  | 2006-07-29 | 0 | 0 | 01 | EM | S10 | 01Y | CV | C4 | S | PS | E | E5B5 | 17 | 10 | 122 | 01Y | CV122 | 15 |  | 17 |  |  |  |  |
| EM01YCV133 |  | 01Y Update Model Piperack Fdns & Issue Dwgs - IFC |  | 15d | 2006-06-14 A | 2006-07-10 A | EM01YCV130, EM01YPI132, EM01YCV122 FF+5d, EK000CV045, EM01UPISSF FF+10d, EM01UPIFWF FF+10d, EM01UPIWWF FF+10d, EK010PI013 FF+10d | 100% | 2006-06-20 | 2006-07-10 |  |  | 2006-07-29 | 0 | 0 | 01 | EM | C40 | 01Y | CV | C5 | C | PS | E | E5B5 | 17 | 10 | 128 | 01Y | CV128 | 15 |  |  |  |  |  |  |
| EM01BCV164 |  | 01B Update Model Major Eq. Fdns & Issue Dwgs-IFC |  | 10d | 2006-07-03 A | 2006-07-31 A | EM01BCV160 FF+15d, EM01BPI132, EK000CV045, EM01BPI200 FF+10d, EM01UPISSF FF+10d, EM01UPIFWF FF+10d, EM01UPIWWF FF+10d, PK000MJ36N FF+10d, PK01BMU100 FF+10d, PK01BMF01 FF+10d, PK01BMF02 FF+10d, PK01BMF03 FF+10d, PK01BMF04 FF+10d, PK01BMF05 FF+10d, PK01BMJV01 FF+10d, PK01BMJV02 FF+10d, PK01BMJV05 FF+10d | 100% | 2006-07-03 | 2006-07-14 |  |  | 2006-07-29 | 0 | 0 | 01 | EM | C30 | 01B | CV | C5 | C | PS | E | E5B5 | 16 | 18 | 164 | 01B | CV164 | 10 | Two small pumps are on hold. Should we complete this item? | 17 |  |  |  |  |
| EM01BCV123 |  | 01B Update Model S/S Sleepers & Issue Dwgs - IFC |  | 30d | 2006-07-12 A | 2006-08-30 A | EM01BCV120, EM01BPI132 FF+15d, EK000CV045, EM01BPI200 FF+15d, EM01BPI136 SF+4d, EM01UPISSF FF+15d, EM01UPIFWF FF+15d, EM01UPIWWF FF+15d, PK000MJ36J FF+15d, PK000MJ36N FF+15d, PK01BMU100 FF+15d | 100% | 2006-07-12 | 2006-08-22 |  |  | 2006-07-29 | 0 | 0 | 01 | EM | S10 | 01B | CV | C4 | S | PS | E | E5B5 | 16 | 18 | 128 | 01B | CV128 | 10 | August Milestone. |  |  |  |  |  |
| EM01BCV126 |  | 01B Conceptual Misc. Steel Design/ Model |  | 20d | 2006-07-12 A | 2006-08-28 A | EM01BPI132, EM01BPI136 SF+3d | 100% | 2006-07-12 | 2006-08-08 |  |  | 2006-07-29 | 0 | 0 | 01 | EM | S30 | 01B | CV | C2 | S |  | E | E5B5 | 16 | 18 | 126 | 01B | CV126 |  |  |  |  |  |  |  |
| EM01BCV166 |  | 01B Conceptual Misc. Foundation Design/ Model |  | 15d | 2006-07-24 A | 2006-08-28 A | EM01BCV160 FF+10d, EM01BPI132, EM01BPI136 SF+3d | 100% | 2006-07-24 | 2006-08-11 |  |  | 2006-07-29 | 0 | 0 | 01 | EM | C60 | 01B | CV | C3 | C |  | E | E5B5 | 16 | 18 | 166 | 01B | CV166 |  |  |  |  |  |  |  |
| EM01DCV126 |  | 01D Conceptual Misc. Steel Design/ Model |  | 20d | 2006-07-27 A | 2006-09-29 A | EM01DCV120 FF, EM01DPI132, EM01DPI136 FF+5d | 100% | 2006-07-27 | 2006-08-23 |  |  | 2006-07-29 | 0 | 0 | 01 | EM | S30 | 01D | CV | C2 | S |  | E | E5B5 | 10 | 31 | 126 | 01D | CV126 |  |  |  |  |  |  |  |
| EM01BCV133 |  | 01B Update Model S/S Sleeper Fdns & Issue Dwgs - IFC |  | 25d | 2006-07-31 A | 2006-08-30 A | EM01BCV130, EM01BPI132 FF+15d, EM01BCV123 FF+2d, EK000CV045, EM01BPI200 FF+10d, EM01UPISSF FF+10d, EM01UPIFWF FF+10d, EM01UPIWWF FF+10d | 100% | 2006-07-31 | 2006-09-01 |  |  | 2006-07-29 | 0 | 0 | 01 | EM | C40 | 01B | CV | C5 | C | PS | E | E5B5 | 16 | 18 | 128 | 01B | CV128 | 10 | August Milestone. |  |  |  |  |  |
| EM01DCV166 |  | 01D Conceptual Misc. Foundation Design/ Model |  | 15d | 2006-08-01 A | 2006-10-31 A | EM01DCV160 FF+10d, EM01DPI132, EM01DPI136 FF+2d | 100% | 2006-08-01 | 2006-08-21 |  |  | 2006-07-29 | 0 | 0 | 01 | EM | C60 | 01D | CV | C3 | C |  | E | E5B5 | 10 | 31 | 166 | 01D | CV166 |  |  |  |  |  |  |  |
| EM01JCV122 |  | 01J Update Model Metering Enclosure & Issue Dwgs (Concrete Wall) - IFC |  | 20d | 2006-08-01 A | 2007-01-12 A | EM01JCV120, EM01JPI132, EK000CV045, EM01UPISSF FF+15d, EM01UPIFWF FF+15d, EM01UPIWWF FF+15d, EM01JPI136 FF+19d | 100% | 2006-08-01 | 2006-08-28 |  |  | 2006-07-29 | 0 | 0 | 01 | EM | S10 | 01J | CV | C4 | S | PS | E | E5B5 | 37 | 11 | 164 | 01J | CV164 | 10 |  |  |  |  |  |  |
| EM01JCV133 |  | 01J Update Model Metering Enclosure Fdns & Dwgs-IFC |  | 20d | 2006-08-15 A | 2007-01-12 A | EM01JCV130, EM01JPI132, EM01JCV122 FF, EK000CV045, EM01UPISSF FF+10d, EM01UPIFWF FF+10d, EM01UPIWWF FF+10d | 100% | 2006-08-18 | 2006-09-14 |  |  | 2006-07-29 | 0 | 0 | 01 | EM | C40 | 01J | CV | C5 | C | PS | E | E5B5 | 37 | 11 | 164 | 01J | CV164 | 10 | SOW Deleted except Chain Link Fence |  |  |  |  |  |
| EM01DCV122 |  | 01D Update Model S/S Sleepers & Issue Dwgs - IFC |  | 15d | 2006-09-04 A | 2006-09-27 A | EM01DCV120, EM01DPI132, EM01DPI200 FF+15d, EM01UPISSF FF+15d, EM01UPIFWF FF+15d, EM01UPIWWF FF+15d, EM01DPI136 FF+10d, PK000MU61N FF+15d | 100% | 2006-09-14 | 2006-10-04 |  |  | 2006-07-29 | 0 | 0 | 01 | EM | S10 | 01D | CV | C4 | S | PS | E | E5B5 | 10 | 31 | 122 | 01D | CV122 | 15 |  |  |  |  |  |  |
| EM01DCV133 |  | 01D Update Model S/S Sleeper Fdns & Issue Dwgs - IFC |  | 20d | 2006-09-04 A | 2006-09-23 A | EM01DCV130, EM01DPI132, EM01DCV122 FF+5d, EK000CV045, EM01DPI200 FF+10d, EM01UPISSF FF+10d, EM01UPIFWF FF+10d, EM01UPIWWF FF+10d | 100% | 2006-09-14 | 2006-10-11 |  |  | 2006-07-29 | 0 | 0 | 01 | EM | C40 | 01D | CV | C5 | C | PS | E | E5B5 | 10 | 31 | 128 | 01D | CV128 | 15 |  |  |  |  |  |  |
| EM01CCV180 |  | 01C Design & Model Major Eq. Fdns (Including EDR) |  | 20d | 2006-09-18 A | 2007-01-05 A | EM01CCV160 FF+5d, PK01CMUV02 FF+5d | 100% | 2006-09-18 | 2006-10-13 |  |  | 2006-07-29 | 0 | 0 | 01 | EM | C30 | 01C | CV | C3 | C |  | E | E5B5 | 21 | 24 | 160 | 01C | CV160 |  |  |  |  |  |  |  |
| EM01BCV127 |  | 01B Model Misc. Steel & Issue Dwgs - IFC |  | 5d | 2006-10-09 A | 2006-11-02 A | EM01BCV126, EM01BPI135 FF+6d | 100% | 2006-10-09 | 2006-10-13 |  |  | 2006-07-29 | 0 | 0 | 01 | EM | S30 | 01B | CV | C4 | S | PS | E | E5B5 | 16 | 18 | 127 | 01B | CV127 | 5 |  |  |  |  |  |  |
| EM01BCV167 |  | 01B Update Model Misc Fdns & Issue Dwgs - IFC |  | 5d | 2006-10-09 A | 2006-11-02 A | EM01BCV166, EM01BCV127 FF, EK000CV045, EM01BPI135 FF+10d | 100% | 2006-10-09 | 2006-10-13 |  |  | 2006-07-29 | 0 | 0 | 01 | EM | C60 | 01B | CV | C5 | C | PS | E | E5B5 | 16 | 18 | 167 | 01B | CV167 | 5 |  |  |  |  |  |  |
| EM01DCV127 |  | 01D Model Misc. Steel & Issue Dwgs - IFC |  | 5d | 2006-10-30 A | 2006-11-02 A | EM01DCV126, EM01DPI135 FF+10d | 100% | 2006-10-30 | 2006-11-03 |  |  | 2006-07-29 | 0 | 0 | 01 | EM | S30 | 01D | CV | C4 | S | PS | E | E5B5 | 10 | 31 | 127 | 01D | CV127 | 5 |  | 17 |  |  |  |  |
| EM01DCV167 |  | 01D Update Model Misc Fdns & Issue Dwgs - IFC |  | 5d | 2006-10-30 A | 2006-11-02 A | EM01DCV166, EM01DCV127 FF, EK000CV045, EM01DPI135 FF+10d | 100% | 2006-10-30 | 2006-11-03 |  |  | 2006-07-29 | 0 | 0 | 01 | EM | C60 | 01D | CV | C5 | C | PS | E | E5B5 | 10 | 31 | 167 | 01D | CV167 | 5 |  |  |  |  |  |  |
| EM01HCV128 |  | 01H Update Model Substation Fdns & Issue Dwgs - IFC |  | 15d | 2006-11-01 A | 2006-11-17 A | EM01HCV125 FF, EK000CV045, PK000E001M SS+22d, EM01HPI200 FF+10d, EM01UPISSF FF+10d, EM01UPIFWF FF+10d, EM01UPIWWF FF+10d | 100% | 2006-10-30 | 2006-11-17 |  |  | 2006-07-29 | 0 | 0 | 01 | EM | C50 | 01H | CV | C5 | C | PS | E | E5B5 | 22 | 39 | 128 | 01H | CV128 | 10 |  |  |  |  |  |  |
| EM01HCV160 |  | 01H Design & Model Major Eq. Fdns |  | 25d | 2006-11-01 A | 2006-11-17 A | PK000E002J, PK000E004J, PK01HMJV01 FF+10d | 100% | 2006-11-01 | 2006-12-05 |  |  | 2006-07-29 | 0 | 0 | 01 | EM | C30 | 01H | CV | C3 | C |  | E | E5B5 | 22 | 39 | 160 | 01H | CV160 |  |  |  |  |  |  |  |
| EM01HCV164 |  | 01H Update Model Major Eq. Fdns & Issue Dwgs-IFC |  | 15d | 2006-11-01 A | 2006-11-17 A | EM01HCV160 FF, EK000CV045, PK000E002M FF+10d, EM01HPI200 FF+10d, EM01UPISSF FF+10d, EM01UPIFWF FF+10d, EM01UPIWWF FF+10d, PK01HMJ135, PK000MJ73N FF+10d, PK000E004M FF, PK01HMJV01 FF+10d | 100% | 2006-11-01 | 2006-11-21 |  |  | 2006-07-29 | 0 | 0 | 01 | EM | C30 | 01H | CV | C5 | C | PS | E | E5B5 | 22 | 39 | 164 | 01H | CV164 | 10 |  |  |  |  |  |  |
| EM01HCV125 |  | 01H Design & Model Substation Fdns |  | 26d | 2006-11-13 A | 2006-11-17 A | PK000E001J | 100% | 2006-11-13 | 2006-12-18 | start on or after 2006-11-06 |  | 2006-07-29 | 0 | 0 | 01 | EM | C50 | 01H | CV | C3 | C |  | E | E5B5 | 22 | 39 | 125 | 01H | CV125 |  | Will check with Electrical for data availability. |  |  |  |  |  |
| EM01HCV126 |  | 01H Conceptual Misc. Steel Design/ Model |  | 20d | 2006-11-13 A | 2006-12-11 A | PK000E001J, PK000E002J, PK000E004J | 100% | 2006-11-13 | 2006-12-08 |  |  | 2006-07-29 | 0 | 0 | 01 | EM | S30 | 01H | CV | C2 | S |  | E | E5B5 | 22 | 39 | 126 | 01H | CV126 |  |  |  |  |  |  |  |
| EM01CCV164 |  | 01C Update Model Major Eq. Fdns & Issue Dwgs-IFC (Excluding EDR) |  | 10d | 2006-11-16 A | 2007-01-26 A | EM01CCV160 FF+15d, EM01CPI132, EK000CV045, EM01CPI200 FF+5d, EM01UPISSF FF+10d, EM01UPIFWF FF+10d, EM01UPIWWF FF+10d | 100% | 2006-11-16 | 2006-11-29 |  |  | 2006-07-29 | 0 | 0 | 01 | EM | C30 | 01C | CV | C5 | C | PS | E | E5B5 | 21 | 24 | 164 | 01C | CV164 | 10 |  |  |  |  |  |  |
| EM01CCV190 |  | 01C Update Model Major Eq. Fdns & Issue Dwgs-IFC (Including EDR) |  | 10d | 2006-12-04 A | 2007-01-26 A | EM01CCV180 FF, EM01CCV164 FF | 100% | 2006-12-04 | 2006-12-15 |  |  | 2006-07-29 | 0 | 0 | 01 | EM | C30 | 01C | CV | C5 | C | PS | E | E5B5 | 21 | 24 | 164 | 01C | CV164 | 10 |  |  |  |  |  |  |
| EM01HCV166 |  | 01H Conceptual Misc. Foundation Design/ Model |  | 15d | 2006-12-04 A | 2006-12-15 A | EM01HCV160 FF+10d | 100% | 2006-12-04 | 2006-12-22 | start on or after 2006-11-27 |  | 2006-07-29 | 0 | 0 | 01 | EM | C60 | 01H | CV | C3 | C |  | E | E5B5 | 22 | 39 | 166 | 01H | CV166 |  |  |  |  |  |  |  |
| EM01HCV127 |  | 01H Model Misc. Steel & Issue Dwgs - IFC |  | 5d | 2006-12-11 A | 2007-01-26 A | EM01HCV126, PK000E002M FF+10d, PK000E001M FF+10d, EM01HPI200 FF+10d, PK000E004M FF+10d | 100% | 2006-12-11 | 2006-12-15 |  |  | 2006-07-29 | 0 | 5.7 | 01 | EM | S30 | 01H | CV | C4 | S | PS | E | E5B5 | 22 | 39 | 127 | 01H | CV127 | 5 |  | 17 |  | 4 | 5 | 10 |
| EM01HCV167 |  | 01H Model Misc Fdns & Issue Dwgs - IFC |  | 5d | 2006-12-18 A | 2007-01-26 A | EM01HCV166, EM01HCV127 FF, EK000CV045, PK000E001M FF+10d, PK000E002M FF+10d, PK000E004M FF+10d, PK000E001J FS+15d | 100% | 2006-12-18 | 2006-12-22 |  |  | 2006-07-29 | 0 | 0 | 01 | EM | C60 | 01H | CV | C5 | C | PS | E | E5B5 | 22 | 39 | 167 | 01H | CV167 | 5 |  |  |  |  |  |  |

| ID | WBS | Activity | Duration | Start | Finish | Predecessors | Complete | Planned start | Planned finish | Calendar | zData Date | Sequence | PCA Criticality Index | PCA Duration Sensitivity | User Defined Field 1 | User Definer Field 2 | EB02 - UNIT | EB01 - RESP | EB06 - WORK OP | EB03 - AREA | EB05 - DISCIPLINE | EB04 - CLASS | EB00 - EPC | EB15 - Civil / U/G Path of Construction | EB16 - Piping Path of Construction | EB17 - Suffix | Optimistic Duration | Most Likely Duration | Pessimistic Duration | user_integer2 | EB14 - RISK | EB07 - REQN | EB08 - TAG | EB11 - FLAG | EB10 - KEY | user_text2 | EB12 - TEMP | EB19 - System | user_text1 |
| --- | --- | --- | --- | --- | --- | --- | --- | --- | --- | --- | --- | --- | --- | --- | --- | --- | --- | --- | --- | --- | --- | --- | --- | --- | --- | --- | --- | --- | --- | --- | --- | --- | --- | --- | --- | --- | --- | --- | --- |
|  | EL | **Electrical Engineering** |  | 2005-09-27 | 2006-03-20 |  |  |  |  |  |  |  |  |  |  |  |  |  |  |  |  |  |  |  |  |  |  |  |  |  |  |  |  |  |  |  |  |  |  |
| EM01YEL120 |  | 01Y Electrical Conceptual Layouts | 40d | 2005-09-27 A | 2005-11-03 A | EK010SY050 | 100% | 2005-09-27 | 2005-11-21 |  | 2006-07-29 | 120 | 0 | 0 | 01Y | EL120 | 01 | EM | P20 | 01Y | EL | E | E | 17 | 10 | E5B5 |  |  |  |  |  |  |  |  |  |  |  |  |  |
| EM01CEL120 |  | 01C Electrical Conceptual Layouts | 15d | 2005-10-03 A | 2006-03-20 A | EK01CSY170 FF+20d, EK010SY050, EK010PI010 SS+4d, PK000MU30N FF | 100% | 2006-03-20 | 2006-04-07 |  | 2006-07-29 | 120 | 0 | 0.2 | 01C | EL120 | 01 | EM | P20 | 01C | EL | E | E | 21 | 24 | E5B5 | 10 | 16 | 20 |  |  |  |  |  |  |  |  |  |  |
| EM01BEL120 |  | 01B Electrical Conceptual Layouts | 16d | 2005-10-21 A | 2005-11-03 A | EK01BPI030 | 100% | 2005-10-21 | 2005-11-11 |  | 2006-07-29 | 120 | 0 | 0 | 01B | EL120 | 01 | EM | P20 | 01B | EL | E | E | 16 | 18 | E5B5 |  |  |  |  |  |  |  |  |  |  |  |  |  |
| EM01DEL120 |  | 01D Electrical Conceptual Layouts | 20d | 2005-10-21 A | 2005-11-03 A | EK01DPI030 | 100% | 2005-10-21 | 2005-11-17 |  | 2006-07-29 | 120 | 0 | 0 | 01D | EL120 | 01 | EM | P20 | 01D | EL | E | E | 10 | 31 | E5B5 |  |  |  |  |  |  |  |  |  |  |  |  |  |
| EM01EEL120 |  | 01E Electrical Conceptual Layouts | 25d | 2005-10-28 A | 2005-12-13 A | EK01ESY170 FF+20d, EK010SY050 | 100% | 2005-11-14 | 2005-12-16 |  | 2006-07-29 | 120 | 0 | 0 | 01E | EL120 | 01 | EM | P20 | 01E | EL | E | E | 7 | 7 | E5B5 |  |  |  |  |  |  |  |  |  |  |  |  |  |
| EM01AEL120 |  | 01A Electrical Conceptual Layouts | 40d | 2005-10-31 A | 2005-11-08 A | EK01API030 | 100% | 2005-10-31 | 2005-12-23 |  | 2006-07-29 | 120 | 0 | 0 | 01A | EL120 | 01 | EM | P20 | 01A | EL | E | E | 30 | 27 | E5B5 |  |  |  | 40 | 17 |  |  |  |  |  |  |  |  |
| EM01HEL120 |  | 01H Electrical Conceptual Layouts | 25d | 2005-11-01 A | 2005-12-09 A | EK01HSY170 FF+20d, EK010SY050 | 100% | 2005-11-14 | 2005-12-16 |  | 2006-07-29 | 120 | 0 | 0 | 01H | EL120 | 01 | EM | P20 | 01H | EL | E | E | 22 | 39 | E5B5 |  |  |  |  |  |  |  |  |  |  |  |  |  |
| EM01JEL120 |  | 01J Electrical Conceptual Layouts | 15d | 2005-11-21 A | 2005-12-13 A | EK01JSY170 FF+20d, EK010SY050, EK01JPI030 FF | 100% | 2005-11-21 | 2005-12-09 |  | 2006-07-29 | 120 | 0 | 0 | 01J | EL120 | 01 | EM | P20 | 01J | EL | E | E | 37 | 11 | E5B5 |  |  |  |  |  |  |  |  |  |  |  |  |  |
|  | EV | **Environmental Engineering** |  |  |  |  |  |  |  |  |  |  |  |  |  |  |  |  |  |  |  |  |  |  |  |  |  |  |  |  |  |  |  |  |  |  |  |  |  |
|  | FP | **Fire Protection Engineering** |  |  |  |  |  |  |  |  |  |  |  |  |  |  |  |  |  |  |  |  |  |  |  |  |  |  |  |  |  |  |  |  |  |  |  |  |  |
|  | GE | **General Engineering (All Disciplines)** |  |  |  |  |  |  |  |  |  |  |  |  |  |  |  |  |  |  |  |  |  |  |  |  |  |  |  |  |  |  |  |  |  |  |  |  |  |
|  | IC | **Control Sytems Engineering** |  |  |  |  |  |  |  |  |  |  |  |  |  |  |  |  |  |  |  |  |  |  |  |  |  |  |  |  |  |  |  |  |  |  |  |  |  |
|  | MB | **Furnaces & Flares Engineering** |  |  |  |  |  |  |  |  |  |  |  |  |  |  |  |  |  |  |  |  |  |  |  |  |  |  |  |  |  |  |  |  |  |  |  |  |  |
|  | MC | **Exchangers Engineering** |  |  |  |  |  |  |  |  |  |  |  |  |  |  |  |  |  |  |  |  |  |  |  |  |  |  |  |  |  |  |  |  |  |  |  |  |  |
|  | MD | **Vessels Engineering** |  | 2006-04-17 | 2006-07-03 |  |  |  |  |  |  |  |  |  |  |  |  |  |  |  |  |  |  |  |  |  |  |  |  |  |  |  |  |  |  |  |  |  |  |
| EM01BMD228 |  | 01B Clips Release IFC (Tanks, 2001FA/FB) | 30d | 2006-04-17 A | 2006-05-02 A | EM01BPI132 | 100% | 2006-04-17 | 2006-05-26 |  | 2006-07-29 | 224 | 0 | 0 | 05A | MD224 | 01 | EM | MD2 | 01B | MD | M | E | 16 | 18 | E5B5 |  |  |  |  |  | P1080 | 2001FA |  |  |  |  |  |  |
| EM01BMD229 |  | 01B Vessel Steel Release IFC | 20d | 2006-05-01 A | 2006-07-03 A | EM01BMD228 | 100% | 2006-05-01 | 2006-05-26 |  | 2006-07-29 | 224 | 0 | 0 | 05A | MD224 | 01 | EM | MD2 | 01B | MD | M | E | 16 | 18 | E5B5 |  |  |  |  |  | P1080 |  | PS |  |  |  |  |  |
|  | MJ | **Machinery Engineering** |  |  |  |  |  |  |  |  |  |  |  |  |  |  |  |  |  |  |  |  |  |  |  |  |  |  |  |  |  |  |  |  |  |  |  |  |  |
|  | PI | **Piping Engineering** |  | 2005-07-15 | 2007-01-29 |  |  |  |  |  |  |  |  |  |  |  |  |  |  |  |  |  |  |  |  |  |  |  |  |  |  |  |  |  |  |  |  |  |  |
| EM01YPI120 |  | 01Y Plant Layout Model | 25d | 2005-07-15 A | 2006-01-18 A | EM01YEL120 FF, EK010SY050, EK020PI010 SS+5d, EK010SY030 | 100% | 2005-11-18 | 2005-12-23 | EBWK 5 Day MEC Holidays | 2006-07-29 | 120 | 0 | 0 | 01Y | PI120 | 01 | EM | P20 | 01Y | PI | P | E | 17 | 10 | E5B5 |  |  |  |  |  |  |  |  | P02 |  |  |  |  |
| EM01BPI120 |  | 01B Plant Layout Model | 59d | 2005-09-20 A | 2006-03-03 A | EM01BEL120 FF, EK01BPI030, PK01BMJ154 FF+5d, EM000PI025 FF | 100% | 2005-09-27 | 2005-12-20 | EBWK 5 Day MEC Holidays | 2006-07-29 | 120 | 0 | 0 | 01B | PI120 | 01 | EM | P20 | 01B | PI | P | E | 16 | 18 | E5B5 |  |  |  |  |  |  |  |  | P02 |  |  |  |  |
| EM01CPI120 |  | 01C Plant Layout Model | 66d | 2005-09-23 A | 2006-11-08 A | EK01CSY170 FF, PK000MU30N FF+10d, EM01CEL120 FF | 100% | 2005-09-23 | 2006-01-03 | EBWK 5 Day MEC Holidays | 2006-07-29 | 120 | 0 | 8.1 | 01C | PI120 | 01 | EM | P20 | 01C | PI | P | E | 21 | 24 | E5B5 | 15 | 19 | 25 |  |  |  |  |  | P02 |  |  |  |  |
| EM01DPI120 |  | 01D Plant Layout Model | 70d | 2005-10-03 A | 2006-02-28 A | EK020SY145 FF, EM01DEL120 FF, EK01DPI030, EK01DSY170 FF, PK01DMJ154 FF+10d, EM000PI025 FF, EK010I1100 FF, EK010I1150 FF, EK010I1210 FF, EK010I1240 FF, EK010IC210 FF | 100% | 2005-10-03 | 2006-01-17 | EBWK 5 Day MEC Holidays | 2006-07-29 | 120 | 0 | 0 | 01D | PI120 | 01 | EM | P20 | 01D | PI | P | E | 10 | 31 | E5B5 |  |  |  |  |  |  |  |  | P02 |  |  |  |  |
| EM01JPI120 |  | 01J Plant Layout Model | 30d | 2005-10-31 A | 2006-05-17 A | EM01JEL120 FF, EK01JPI030, EM000PI025 FF | 100% | 2005-10-31 | 2005-12-13 | EBWK 5 Day MEC Holidays | 2006-07-29 | 120 | 0 | 0 | 01J | PI120 | 01 | EM | P20 | 01J | PI | P | E | 37 | 11 | E5B5 |  |  |  |  |  |  |  |  | P02 |  |  |  |  |
| EM01UPIBSB |  | 01U IDP - Plant Layout - Benfield Sewer | 5d | 2005-11-01 A | 2005-11-11 A | EM01UPIBSC | 100% | 2005-11-14 | 2005-11-18 | EBWK 5 Day MEC Holidays | 2006-07-29 |  | 0 | 0 |  |  | 01 | EM | U20 | 01U | PI | U | E | 1 | 1 | E1B1 |  |  |  | 16 |  |  |  |  | P05 | EK02UPICBB | X | CB |  |
| EM01UPICWB |  | 01U IDP - Plant Layout - Cooling Water | 5d | 2005-11-01 A | 2005-11-11 A | EM01UPICWC | 100% | 2005-11-16 | 2005-11-22 | EBWK 5 Day MEC Holidays | 2006-07-29 |  | 0 | 0 |  |  | 01 | EM | U20 | 01U | PI | U | E | 1 | 1 | E5B5 |  |  |  | 16 |  |  |  |  | P05 | EK02UPICBB | X | CW |  |
| EM01UPIFWB |  | 01U IDP - Plant Layout - Firewater | 5d | 2005-11-01 A | 2005-11-11 A | EM01UPISSC | 100% | 2005-11-16 | 2005-11-22 | EBWK 5 Day MEC Holidays | 2006-07-29 |  | 0 | 0 |  |  | 01 | EM | U20 | 01U | PI | U | E | 1 | 1 | E5B5 |  |  |  | 16 |  |  |  |  | P05 | EK02UPICBB | X | FW |  |
| EM01UPIPAB |  | 01U IDP - Plant Layout - Plant Air | 5d | 2005-11-01 A | 2005-11-11 A | EM01UPIPAC | 100% | 2005-11-16 | 2005-11-22 | EBWK 5 Day MEC Holidays | 2006-07-29 |  | 0 | 0 |  |  | 01 | EM | U20 | 01U | PI | U | E | 1 | 1 | E2B2 |  |  |  | 16 |  |  |  |  | P05 | EK02UPICBB | X | PA |  |
| EM01UPIPWB |  | 01U IDP - Plant Layout - Potable Water | 5d | 2005-11-01 A | 2005-11-11 A | EM01UPIPWC | 100% | 2005-11-16 | 2005-11-22 | EBWK 5 Day MEC Holidays | 2006-07-29 |  | 0 | 0 |  |  | 01 | EM | U20 | 01U | PI | U | E | 1 | 1 | E2B2 |  |  |  | 16 |  |  |  |  | P05 | EK02UPICBB | X | PW |  |
| EM01UPISSB |  | 01U IDP - Plant Layout - Sanitary Sewer | 5d | 2005-11-01 A | 2005-11-11 A | EM01UPISSC | 100% | 2005-11-16 | 2005-11-22 | EBWK 5 Day MEC Holidays | 2006-07-29 |  | 0 | 0 |  |  | 01 | EM | U20 | 01U | PI | U | E | 1 | 1 | E2B2 |  |  |  | 16 |  |  |  |  | P05 | EK02UPICBB | X | SS |  |
| EM01UPIWWB |  | 01U IDP - Plant Layout - Waste Water | 5d | 2005-11-01 A | 2005-11-11 A | EM01UPIWWC | 100% | 2005-11-16 | 2005-11-22 | EBWK 5 Day MEC Holidays | 2006-07-29 |  | 0 | 0 |  |  | 01 | EM | U20 | 01U | PI | U | E | 1 | 1 | E5B5 |  |  |  | 16 |  |  |  |  | P05 | EK02UPICBB | X | WW |  |
| EM01UPI186 |  | 01U Planning Release - Common, SS, FW, CW, WW, AP, WP | 5d | 2005-11-11 A | 2006-03-03 A | EM01UPISSB, EM01UPIFWB, EM01UPICWB, EM01UPIWWB, EM01UPIPAB, EM01UPIPWB, EM01UPIBSB | 100% | 2006-01-09 | 2006-01-13 | EBWK 5 Day MEC Holidays | 2006-07-29 |  | 0 | 0 |  |  | 01 | EM | U20 | 01U | PI | U | E | 2 | 2 | E5B5 |  |  |  |  |  |  |  | PS | P07 |  |  | 01U |  |
| EM01API120 |  | 01A Plant Layout Model | 30d | 2005-11-14 A | 2006-03-20 A | EK020SY145 FF+10d, EM01AEL120 FF, EK01API030, EK01ASY170 FF+15d, EK010SY050, EM000PI025 FF, EK010I1100 FF, EK010I1150 FF, EK010I1210 FF, EK010I1240 FF | 100% | 2005-11-14 | 2006-01-02 | EBWK 5 Day MEC Holidays | 2006-07-29 | 120 | 0 | 0 | 01A | PI120 | 01 | EM | P20 | 01A | PI | P | E | 30 | 27 | E5B5 |  |  |  |  |  |  |  |  | P02 |  |  |  |  |
| EM01BPI123 |  | 01B Plant Layout Nozzle Release | 5d | 2005-11-18 A | 2005-11-24 A | EM01BPI120 SS+20d | 100% |  |  | EBWK 5 Day MEC Holidays | 2006-07-29 | 123 | 0 | 0 | 01B | PI123 | 01 | EM | P20 | 01B | PI | P | E | 16 | 18 | E5B5 |  |  |  |  |  |  |  |  | P19 |  |  |  |  |
| EM01UPIBSC |  | 01U Model Review Mtg (HOC/MEC) - Benfield Sewer | 5d | 2005-11-23 A | 2005-11-23 A | EK01PIBSA, EM000U000 SS | 100% | 2005-11-15 | 2005-11-21 | EBWK 5 Day MEC Holidays | 2006-07-29 |  | 0 | 0 |  |  | 01 | EM | U20 | 01U | PI | U | E | 1 | 1 | E1B1 |  |  |  | 5 |  |  |  |  | P03 | EK02UPICBC |  | CB |  |
| EM01UPIPAC |  | 01U Model Review Mtg -Plant Air | 5d | 2005-11-28 A | 2005-12-01 A | EK01UPIPAA, EM000U000 SS | 100% | 2005-11-14 | 2005-11-18 | EBWK 5 Day MEC Holidays | 2006-07-29 |  | 0 | 0 |  |  | 01 | EM | U20 | 01U | PI | U | E | 1 | 1 | E1B1 |  |  |  | 5 |  |  |  |  | P03 | EK02UPICBC |  | PA |  |
| EM01UPIPWC |  | 01U Model Review Mtg -Potable Water | 5d | 2005-11-28 A | 2005-12-01 A | EK01UPIPWA, EM000U000 SS | 100% | 2005-11-14 | 2005-11-18 | EBWK 5 Day MEC Holidays | 2006-07-29 |  | 0 | 0 |  |  | 01 | EM | U20 | 01U | PI | U | E | 1 | 1 | E1B1 |  |  |  | 5 |  |  |  |  | P03 | EK02UPICBC |  | PW |  |
| EM01UPIWWC |  | 01U Model Review Mtg - Waste Water | 5d | 2005-11-28 A | 2005-12-01 A | EK01UPIWWA, EM000U000 SS | 100% | 2005-11-14 | 2005-11-18 | EBWK 5 Day MEC Holidays | 2006-07-29 |  | 0 | 0 |  |  | 01 | EM | U20 | 01U | PI | U | E | 1 | 1 | E2B2 |  |  |  | 5 |  |  |  |  | P03 | EK02UPICBC |  | WW |  |
| EM01UPICWC |  | 01U Model Review Mtg - Cooling Water | 5d | 2005-11-28 A | 2005-12-01 A | EK01UPICWA, EM000U000 SS | 100% | 2005-11-28 | 2005-12-02 | EBWK 5 Day MEC Holidays | 2006-07-29 |  | 0 | 0 |  |  | 01 | EM | U20 | 01U | PI | U | E | 1 | 1 | E2B2 |  |  |  | 5 |  |  |  |  | P03 | EK02UPICBC |  | CW |  |
| EM01UPIFWC |  | 01U Model Review Mtg - Firewater | 5d | 2005-11-28 A | 2005-12-01 A | EK01UPIFWA, EM000U000 SS | 100% | 2005-11-28 | 2005-12-02 | EBWK 5 Day MEC Holidays | 2006-07-29 |  | 0 | 0 |  |  | 01 | EM | U20 | 01U | PI | U | E | 1 | 1 | E2B2 |  |  |  | 5 |  |  |  |  | P03 | EK02UPICBC |  | FW |  |
| EM01UPISSC |  | 01U Model Review Mtg - Sanitary Sewer | 5d | 2005-11-28 A | 2005-12-01 A | EK01UPISSA, EM000U000 SS | 100% | 2005-11-28 | 2005-12-02 | EBWK 5 Day MEC Holidays | 2006-07-29 |  | 0 | 0 |  |  | 01 | EM | U20 | 01U | PI | U | E | 1 | 1 | E1B1 |  |  |  | 5 |  |  |  |  | P03 | EK02UPICBC |  | SS |  |
| EM01API123 |  | 01A Plant Layout Nozzle Release | 5d | 2005-12-05 A | 2005-12-20 A | EM01API120 SS+15d | 100% | 2005-12-05 | 2005-12-09 | EBWK 5 Day MEC Holidays | 2006-07-29 | 123 | 0 | 0 | 01A | PI123 | 01 | EM | P20 | 01A | PI | P | E | 30 | 27 | E5B5 |  |  |  |  |  |  |  |  | P19 |  |  |  |  |
| EM01YPI130 |  | 01Y Model Review Mtg | 1d | 2006-02-20 A | 2006-02-21 A | EK020PI011, EM01YPI120 | 100% | 2006-02-27 | 2006-02-27 | EBWK 5 Day MEC Holidays | 2006-07-29 | 130 | 0 | 0 | 01Y | PI130 | 01 | EM | P20 | 01Y | PI | P | E | 17 | 10 | E5B5 |  |  |  |  |  |  |  |  | P03 |  |  |  |  |
| EM01YPI140 |  | 01Y Model Review Comment Resolution | 5d | 2006-02-21 A | 2006-02-27 A | EM01YPI130 | 100% | 2006-03-06 | 2006-03-10 | EBWK 5 Day MEC Holidays | 2006-07-29 | 130 | 0 | 0 | 01Y | PI130 | 01 | EM | P20 | 01Y | PI | P | E | 17 | 10 | E5B5 |  |  |  |  |  |  |  |  | P04 |  |  |  |  |
| EM01BPI130 |  | 01B Model Review Mtg | 2d | 2006-02-23 A | 2006-02-24 A | EM01BPI120 | 100% | 2006-03-06 | 2006-03-07 | EBWK 5 Day MEC Holidays | 2006-07-29 | 130 | 0 | 0 | 01B | PI130 | 01 | EM | P20 | 01B | PI | P | E | 16 | 18 | E5B5 |  |  |  |  |  |  |  |  | P03 |  |  |  |  |
| EM01BPI121 |  | 01B Model Review Comment Resolution | 5d | 2006-02-27 A | 2006-03-03 A | EM01BPI130 | 100% | 2006-03-08 | 2006-03-14 | EBWK 5 Day MEC Holidays | 2006-07-29 |  | 0 | 0 |  |  | 01 | EM | P20 | 01B | PI | P | E |  |  |  |  |  |  |  |  |  |  |  | P04 |  |  |  |  |
| EM01API200 |  | 01A Equipment Location Plans | 10d | 2006-02-27 A | 2006-09-22 A | EK010PI013, PK01AMLV01 FF+5d, EM01API132 FF | 100% | 2006-02-27 | 2006-03-10 | EBWK 5 Day MEC Holidays | 2006-07-29 | 132 | 0 | 0 | 02A | PI132 | 01 | EM | P20 | 01A | PI | P | E | 36 | 25 | E4B4 |  |  |  |  |  |  |  |  | P18 |  |  |  | 01A ML900 2408-LA,LB,LC,LD - Piping Data. |
| EM01BPI200 |  | 01B Equipment Location Plans | 27d | 2006-02-27 A | 2006-04-07 A | EK010PI013 | 100% | 2006-02-27 | 2006-04-05 | EBWK 5 Day MEC Holidays | 2006-07-29 | 132 | 0 | 0 | 02A | PI132 | 01 | EM | P20 | 01B | PI | P | E | 36 | 25 | E4B4 |  |  |  |  |  |  |  |  | P18 |  |  |  |  |
| EM01CPI200 |  | 01C Equipment Location Plans | 66d | 2006-02-27 A | 2006-12-15 A | EK010PI013, EM01CPI132 FF+2d | 100% | 2006-02-27 | 2006-06-02 | EBWK 5 Day MEC Holidays | 2006-07-29 | 132 | 0 | 0 | 02A | PI132 | 01 | EM | P20 | 01C | PI | P | E | 36 | 25 | E4B4 |  |  |  |  |  |  |  |  | P18 |  |  |  |  |
| EM01DPI200 |  | 01D Equipment Location Plans | 25d | 2006-02-27 A | 2006-04-07 A | EK010PI013 | 100% | 2006-02-27 | 2006-04-03 | EBWK 5 Day MEC Holidays | 2006-07-29 | 132 | 0 | 0 | 02A | PI132 | 01 | EM | P20 | 01D | PI | P | E | 36 | 25 | E4B4 |  |  |  |  |  |  |  |  | P18 |  |  |  |  |
| EM01HPI200 |  | 01H Equipment Location Plans | 25d | 2006-02-27 A | 2006-04-07 A | EK010PI013, EM01HEL120 | 100% | 2006-02-27 | 2006-04-03 | EBWK 5 Day MEC Holidays | 2006-07-29 | 132 | 0 | 0 | 02A | PI132 | 01 | EM | P20 | 01H | PI | P | E | 36 | 25 | E4B4 |  |  |  |  |  |  |  |  | P18 |  |  |  |  |
| EM01YPI133 |  | 01Y IDP - Plant Layout | 2d | 2006-02-27 A | 2006-02-28 A | EM01YPI140 | 100% |  |  | EBWK 5 Day MEC Holidays | 2006-07-29 | 132 | 0 | 0 | 01A | PI132 | 01 | EM | P20 | 01Y | PI | P | E | 17 | 10 | E5B5 |  |  |  |  |  |  |  |  | P05 |  |  |  |  |
| EM01DPI130 |  | 01D Model Review Mtg | 2d | 2006-03-02 A | 2006-03-03 A | EM01DPI120 | 100% |  |  | EBWK 5 Day MEC Holidays | 2006-07-29 | 130 | 0 | 0 | 01D | PI130 | 01 | EM | P20 | 01D | PI | P | E | 10 | 31 | E5B5 |  |  |  |  |  |  |  |  | P03 |  |  |  |  |
| EM01BPI133 |  | 01B IDP - Plant Layout | 5d | 2006-03-06 A | 2006-03-10 A | EM01BPI121 | 100% | 2006-03-13 | 2006-03-17 | EBWK 5 Day MEC Holidays | 2006-07-29 | 132 | 0 | 0 | 01A | PI132 | 01 | EM | P20 | 01B | PI | P | E | 16 | 18 | E5B5 |  |  |  |  |  |  |  |  | P05 |  |  |  |  |
| EM01DPI133 |  | 01D IDP - Plant Layout | 2d | 2006-03-13 A | 2006-03-14 A | EK01DPI021 | 100% | 2006-03-16 | 2006-03-17 | EBWK 5 Day MEC Holidays | 2006-07-29 | 132 | 0 | 0 | 01A | PI132 | 01 | EM | P20 | 01D | PI | P | E | 10 | 31 | E5B5 |  |  |  |  |  |  |  |  | P05 |  |  |  |  |
| EM01UPIFWF |  | 01U IDP - Detail Design - HDPE Piping (FW) | 5d | 2006-03-13 A | 2006-03-17 A | EK010PI013, EM01UPI186 | 100% |  |  | EBWK 5 Day MEC Holidays | 2006-07-29 |  | 0 | 0 |  |  | 01 | EM | U20 | 01U | PI | U | E | 1 | 1 | E5B5 |  |  |  | 50 | 17 |  |  |  | P11 | EM02UPICBF |  | FW |  |
| EM01UPISSF |  | 01U IDP - Detail Design - Metalic Piping (SY, CW, PA & BS) | 5d | 2006-03-13 A | 2006-05-03 A | EK010PI013, EM01UPI186 | 100% | 2006-03-13 | 2006-03-17 | EBWK 5 Day MEC Holidays | 2006-07-29 |  | 0 | 0 |  |  | 01 | EM | U20 | 01U | PI | U | E | 1 | 1 | E5B5 |  |  |  | 50 | 17 |  |  |  | P11 | EM02UPICBF |  | SS |  |
| EM01UPIWWF |  | 01U IDP - Detail Design - Other HDPE (WW & DW) | 5d | 2006-03-13 A | 2006-04-04 A | EK010PI013, EM01UPI186 | 100% | 2006-03-13 | 2006-03-17 | EBWK 5 Day MEC Holidays | 2006-07-29 |  | 0 | 0 |  |  | 01 | EM | U20 | 01U | PI | U | E | 1 | 1 | E5B5 |  |  |  | 50 | 17 |  |  |  | P11 | EM02UPICBF |  | WW |  |
| EM01BPI132 |  | 01B Planning Release | 1d | 2006-03-17 A | 2006-04-04 A | EM01BCV130 FF, EM01BCV160 FF, EK01BPI050 FF | 100% | 2006-03-24 | 2006-03-24 | EBWK 5 Day MEC Holidays | 2006-07-29 | 132 | 0 | 0 | 01B | PI132 | 01 | EM | P20 | 01B | PI | P | E | 16 | 18 | E5B5 |  |  |  |  |  |  |  | PS | P07 |  |  |  |  |
| EM01YPI134 |  | 01Y Detail Model Development | 25d | 2006-03-20 A | 2006-04-26 A | EM01YPI133, EK01YIC300 SS+3d | 100% |  |  | EBWK 5 Day MEC Holidays | 2006-07-29 | 134 | 0 | 0 | 01Y | PI134 | 01 | EM | P50 | 01Y | PI | P | E | 17 | 10 | E5B5 |  |  |  |  |  |  |  |  | P08 |  |  |  |  |
| EM01UPIFWG |  | 01U Iso Issue IFC - HDPE Piping FW | 12d | 2006-03-27 A | 2006-03-31 A | EM01UPIFWF | 100% | 2006-03-27 | 2006-04-11 | EBWK 5 Day MEC Holidays | 2006-07-29 |  | 0 | 0 |  |  | 01 | EM | U40 | 01U | PI | U | E | 1 | 1 | E5B5 |  |  |  | 50 | 17 |  |  | PS | P13 | EM02UPICBG |  | FW |  |
| EM01API131 |  | 01A Model Review Comment Resolution | 7d | 2006-04-04 A | 2006-05-05 A | EM01API130 | 100% | 2006-03-27 | 2006-04-04 | EBWK 5 Day MEC Holidays | 2006-07-29 |  | 0 | 0 |  |  | 01 | EM | P20 | 01A | PI | P | E |  |  |  |  |  |  |  |  |  |  |  | P04 |  |  |  |  |
| EM01API130 |  | 01A Model Review Mtg | 1d | 2006-04-04 A | 2006-04-17 A | EK020PI011, EM01API120, EM01API123 FF | 100% | 2006-04-04 | 2006-04-04 | EBWK 5 Day MEC Holidays | 2006-07-29 | 130 | 0 | 0 | 01A | PI130 | 01 | EM | P20 | 01A | PI | P | E | 30 | 27 | E5B5 |  |  |  |  |  |  |  |  | P03 |  |  |  |  |
| EM01DPI132 |  | 01D Planning Release | 1d | 2006-04-04 A | 2006-04-04 A | EM01DCV120 FF, EM01DCV130 FF, EM01DCV160 FF, EM01DPI130, EK01DPI050 FF, EM01DPI133 FS+5d | 100% |  |  | EBWK 5 Day MEC Holidays | 2006-07-29 | 132 | 0 | 0 | 01D | PI132 | 01 | EM | P20 | 01D | PI | P | E | 10 | 31 | E5B5 |  |  |  |  |  |  |  | PS | P07 |  |  |  |  |
| EM01YPI132 |  | 01Y Planning Release | 1d | 2006-04-04 A | 2006-04-04 A | EM01YCV130 FF, EM01YPI130, EK01YPI050 FF, EM01YPI133 | 100% |  |  | EBWK 5 Day MEC Holidays | 2006-07-29 | 132 | 0 | 0 | 01Y | PI132 | 01 | EM | P20 | 01Y | PI | P | E | 17 | 10 | E5B5 |  |  |  |  |  |  |  | PS | P07 |  |  |  |  |
| EM01UPIWWG |  | 01U Iso Issue IFC - Other HDPE WW & DW | 7d | 2006-04-11 A | 2006-04-14 A | EM01UPIWWF | 100% | 2006-04-11 | 2006-04-21 | EBWK 5 Day MEC Holidays | 2006-07-29 |  | 0 | 0 |  |  | 01 | EM | U40 | 01U | PI | U | E | 1 | 1 | E5B5 |  |  |  | 50 | 17 |  |  | PS | P13 | EM02UPICBG |  | WW |  |
| EM01YPI138 |  | 01Y Design / Issue Pipe Supports IFC | 30d | 2006-04-19 A | 2006-07-31 A | EK000PI051 FF, EM01YPI132, EM01YPI134 SS, EM01YPI135 FF | 100% | 2006-04-19 | 2006-05-31 | EBWK 5 Day MEC Holidays | 2006-07-29 | 138 | 0 | 0 | 01Y | PI138 | 01 | EM | P60 | 01Y | PI | P | E | 17 | 10 | E5B5 |  |  |  |  |  |  |  | PS | P14 |  |  |  | 88% Complete as of July 27th. |
| EM01UPICWG |  | 01U U/G Plan Dwgs Issue IFC | 12d | 2006-05-04 A | 2006-07-31 A | EM01UPIFWF, EM01UPIWWF, EM01UPISSF | 100% | 2006-05-04 | 2006-05-19 | EBWK 5 Day MEC Holidays | 2006-07-29 |  | 0 | 0 |  |  | 01 | EM | U40 | 01U | PI | U | E | 1 | 1 | E5B5 |  |  |  | 50 | 17 |  |  | PS | P13 | EM02UPICBG |  | CW | 13 Isos total, 1 iso pending to issue. |
| EM01UPISSG |  | 01U Iso Issue IFC - Metalic Piping SY, CW, Pa & BS | 7d | 2006-05-04 A | 2006-05-18 A | EM01UPISSF | 100% | 2006-05-04 | 2006-05-12 | EBWK 5 Day MEC Holidays | 2006-07-29 |  | 0 | 0 |  |  | 01 | EM | U40 | 01U | PI | U | E | 1 | 1 | E5B5 |  |  |  | 50 | 17 |  |  | PS | P13 | EM02UPICBG |  | SS |  |

Notes:
- EM01BPI120: Activity Description: MF302-2001-JA/JB

| ID | Activity | Duration | Start | Finish | Predecessors | Complete | Planned start | Planned finish | Constraint | Calendar | zData Date | Sequence | PCA Criticality Index | PCA Duration Sensitivity | User Defined Field 1 | User Definer Field 2 | EB02 - UNIT | EB01 - RESP | EB06 - WORK OP | EB03 - AREA | EB05 - DISCIPLINE | EB10 - KEY | EB04 - CLASS | EB00 - EPC | EB15 - Civil / U/G Path of Construction | EB16 - Piping Path of Construction | EB17 - Suffix | EB19 - System | EB11 - FLAG | Optimistic Duration | Most Likely Duration | Pessimistic Duration | user_integer2 | user_integer1 | EB14 - RISK |
| --- | --- | --- | --- | --- | --- | --- | --- | --- | --- | --- | --- | --- | --- | --- | --- | --- | --- | --- | --- | --- | --- | --- | --- | --- | --- | --- | --- | --- | --- | --- | --- | --- | --- | --- | --- |
| EM01API133 | 01A IDP - Plant Layout | 3d | 2006-05-05 A | 2006-05-09 A | EM01API131 | 100% | 2006-05-02 | 2006-05-04 |  | EBWK 5 Day MEC Holidays | 2006-07-29 | 132 | 0 | 0 | 01A | PI132 | 01 | EM | P20 | 01A | PI | P05 | P | E | 30 | 27 | E5B5 |  |  |  |  |  |  |  |  |
| EM02UPI200 | 02U Issue U/G Material Final Release | 10d | 2006-05-15 A | 2006-05-25 A | EM02UPIFWG, EM02UPIOWG, EM02UPICBG, EM02UPICWG | 100% | 2006-05-15 | 2006-05-26 |  | EBWK 5 Day MEC Holidays | 2006-07-29 |  | 0 | 0 |  |  | 01 | EM | U20 | 02U | PI | P13 | U | E | 2 | 2 | E5B5 | 01U |  |  |  |  |  |  |  |
| EM01UPI200 | 01U Issue U/G Material Final Release 90% | 10d | 2006-05-18 A | 2006-06-12 A | EM01UPICWG SS+10d, EM01UPIFWG FF+10d, EM01UPIWWG FF+10d, EM01UPISSG FF+10d | 100% | 2006-05-24 | 2006-06-06 |  | EBWK 5 Day MEC Holidays | 2006-07-29 |  | 0 | 0 |  |  | 01 | EM | U20 | 01U | PI | P13 | U | E | 2 | 2 | E5B5 | 01U |  |  |  |  |  |  |  |
| EM03UPI200 | 03U Issue U/G Material Final Release (90%) | 10d | 2006-05-22 A | 2006-06-14 A | EM03UPIOSG FF+5d, EM03UPI190, EM03UPIASG FF+5d, EM03UPIFWG | 100% | 2006-05-29 | 2006-06-09 |  | EBWK 5 Day MEC Holidays | 2006-07-29 |  | 0 | 0 |  |  | 01 | EM | U20 | 03U | PI | P13 | U | E | 2 | 2 | E5B5 | 01U |  |  |  |  |  |  |  |
| EM01YPI141 | 01Y Detail OP's & Services Model Review Mtg | 2d | 2006-05-30 A | 2006-05-30 A | EM01YPI134, EM01YSY172 | 100% | 2006-05-30 | 2006-05-31 |  | EBWK 5 Day MEC Holidays | 2006-07-29 | 130 | 0 | 0 | 01Y | PI130 | 01 | EM | P20 | 01Y | PI | P09 | P | E | 17 | 10 | E5B5 |  |  |  |  |  |  |  |  |
| EM01YPI142 | 01Y OP's & Serv. Model Review Comment Resolution | 2d | 2006-06-05 A | 2006-06-06 A | EM01YPI141 | 100% |  |  |  | EBWK 5 Day MEC Holidays | 2006-07-29 | 130 | 0 | 0 | 01Y | PI130 | 01 | EM | P20 | 01Y | PI | P10 | P | E | 17 | 10 | E5B5 |  |  |  |  |  |  |  |  |
| EM01YPI136 | 01Y IDP - Detail Design | 5d | 2006-06-07 A | 2006-06-12 A | EM01YPI134, EM01YPI142 | 100% | 2006-06-12 | 2006-06-16 |  | EBWK 5 Day MEC Holidays | 2006-07-29 | 132 | 0 | 0 | 01A | PI132 | 01 | EM | P50 | 01Y | PI | P11 | P | E | 17 | 10 | E5B5 |  |  |  |  |  |  |  |  |
| EM05UPI200 | 05U Issue U/G Material Final Release | 10d | 2006-06-09 A | 2006-07-26 A | EM05UPI190, EM05UPI191 SS | 100% | 2006-06-09 | 2006-06-22 |  | EBWK 5 Day MEC Holidays | 2006-07-29 |  | 0 | 0 |  |  | 01 | EM | U20 | 05U | PI | P13 | U | E | 2 | 2 | E5B5 | 01U |  |  |  |  |  |  |  |
| EM01BPI134 | 01B Detail Model Development | 20d | 2006-06-19 A | 2006-07-24 A | EM01BPI132, EK01BIC300 FF+3d, PK01BMF01 FF+10d, PK01BMF02 FF+10d, PK01BMU100 FF+5d, PK01BMF03 FF+10d, PK01BMF04 FF+10d, PK01BMF05 FF+10d, PK01BMJV01 FF+10d, PK01BMJV02 FF+10d, PK01BMJV03 FF+10d, PK01BMJV04 FF+10d | 100% | 2006-06-19 | 2006-07-14 |  | EBWK 5 Day MEC Holidays | 2006-07-29 | 134 | 0 | 0 | 01B | PI134 | 01 | EM | P50 | 01B | PI | P08 | P | E | 16 | 18 | E5B5 |  | VD |  |  |  |  |  |  |
| EM01JPI130 | 01J Model Review Mtg | 1d | 2006-06-20 A | 2006-06-20 A | EK020PI011, EM01JPI120 | 100% | 2006-07-05 | 2006-07-05 |  | EBWK 5 Day MEC Holidays | 2006-07-29 | 130 | 0 | 0 | 01J | PI130 | 01 | EM | P20 | 01J | PI | P03 | P | E | 37 | 11 | E5B5 |  |  |  |  |  |  |  |  |
| EM01JPI140 | 01J Model Review Comment Resolution | 4d | 2006-06-21 A | 2006-06-29 A | EM01JPI130 | 100% | 2006-06-19 | 2006-06-22 |  | EBWK 5 Day MEC Holidays | 2006-07-29 | 130 | 0 | 0 | 01J | PI130 | 01 | EM | P20 | 01J | PI | P04 | P | E | 37 | 11 | E5B5 |  |  |  |  |  |  |  |  |
| EM01DPI134 | 01D Detail Model Development | 30d | 2006-06-22 A | 2006-08-02 A | EM01DPI132, EK01DIC300 FF+3d, PK000MU61N FF+5d, PK01DMJV02 FF+10d, PK01DMUV01 FF+10d, PK01DMUV04 FF+10d, PK01DMUV07 FF+10d | 100% |  |  |  | EBWK 5 Day MEC Holidays | 2006-07-29 | 134 | 0 | 0 | 01D | PI134 | 01 | EM | P50 | 01D | PI | P08 | P | E | 10 | 31 | E5B5 |  | VD | 25 | 30 | 35 |  |  |  |
| EM01YPI135 | 01Y A/G Piping Iso's - Issue IFC | 10d | 2006-06-23 A | 2006-07-31 A | EM01YPI134 SS+10d, EM01YPI134 FF, EM01YPI136, EK01YPI143 | 100% | 2006-06-26 | 2006-07-07 |  | EBWK 5 Day MEC Holidays | 2006-07-29 | 135 | 0 | 0 | 01Y | PI135 | 01 | EM | P50 | 01Y | PI | P13 | P | E | 17 | 10 | E5B5 |  | PS |  |  |  | 5 |  |  |
| EM01JPI133 | 01J IDP - Plant Layout | 1d | 2006-07-03 A | 2006-07-03 A | EM01JPI140 | 100% |  |  |  | EBWK 5 Day MEC Holidays | 2006-07-29 | 132 | 0 | 0 | 01A | PI132 | 01 | EM | P20 | 01J | PI | P05 | P | E | 37 | 11 | E5B5 |  |  |  |  |  |  |  |  |
| EM01JPI141 | 01J Detail OP's & Services Model Review Mtg | 1d | 2006-07-05 A | 2006-07-05 A | EM01JPI134 | 100% | 2006-07-20 | 2006-07-20 |  | EBWK 5 Day MEC Holidays | 2006-07-29 | 130 | 0 | 0 | 01J | PI130 | 01 | EM | P20 | 01J | PI | P09 | P | E | 37 | 11 | E5B5 |  |  |  |  |  |  |  |  |
| EM01JPI142 | 01J OP's & Serv. Model Review Comment Resolution | 1d | 2006-07-06 A | 2006-07-20 A | EM01JPI141 | 100% | 2006-07-20 | 2006-07-20 |  | EBWK 5 Day MEC Holidays | 2006-07-29 | 130 | 0 | 0 | 01J | PI130 | 01 | EM | P20 | 01J | PI | P10 | P | E | 37 | 11 | E5B5 |  |  |  |  |  |  |  |  |
| EM01JPI132 | 01J Planning Release | 1d | 2006-07-06 A | 2006-07-21 A | EM01JCV130 FF, EM01JPI120 FF+10d, EK01JPI050 FF | 100% | 2006-07-06 | 2006-07-06 |  | EBWK 5 Day MEC Holidays | 2006-07-29 | 132 | 0 | 0 | 01J | PI132 | 01 | EM | P20 | 01J | PI | P07 | P | E | 37 | 11 | E5B5 |  | PS |  |  |  |  |  |  |
| EM01API134 | 01A Detail Model Development | 15d | 2006-07-10 A | 2006-07-26 A | EM01API132, EK01AIC300 FF+3d, PK01AMLV01 FF+10d, PK01AMJV01 FF+9d, PK01AMJV02 FF | 100% | 2006-08-09 | 2006-08-29 |  | EBWK 5 Day MEC Holidays | 2006-07-29 | 134 | 0 | 0 | 01A | PI134 | 01 | EM | P50 | 01A | PI | P08 | P | E | 30 | 27 | E5B5 |  |  |  |  |  |  |  |  |
| EM01JPI134 | 01J Detail Model Development | 10d | 2006-07-10 A | 2006-07-14 A | EM01JPI132, EK01JIC300 FF+3d | 100% | 2006-07-20 | 2006-08-02 |  | EBWK 5 Day MEC Holidays | 2006-07-29 | 134 | 0 | 0 | 01J | PI134 | 01 | EM | P50 | 01J | PI | P08 | P | E | 37 | 11 | E5B5 |  |  |  |  |  |  |  |  |
| EM01JPI136 | 01J IDP - Detail Design | 2d | 2006-07-21 A | 2006-07-25 A | EM01JPI134, EM01JPI142 | 100% | 2006-07-21 | 2006-07-24 |  | EBWK 5 Day MEC Holidays | 2006-07-29 | 132 | 0 | 0 | 01A | PI132 | 01 | EM | P50 | 01J | PI | P11 | P | E | 37 | 11 | E5B5 |  |  |  |  |  |  |  |  |
| EM01BPI141 | 01B Detail OP's & Services Model Review Mtg | 5d | 2006-07-25 A | 2006-07-26 A | EM01BPI134, EM01BSY172 | 100% | 2006-07-25 | 2006-07-31 |  | EBWK 5 Day MEC Holidays | 2006-07-29 | 134 | 0 | 0 | 01A | PI134 | 01 | EM | P20 | 01B | PI | P09 | P | E | 30 | 27 | E5B5 |  |  |  |  |  |  |  |  |
| EM01API141 | 01A Detail OP's & Services Model Review Mtg | 5d | 2006-07-26 A | 2006-07-27 A | EM01API134 | 100% | 2006-08-22 | 2006-08-28 |  | EBWK 5 Day MEC Holidays | 2006-07-29 | 134 | 0 | 0 | 01A | PI134 | 01 | EM | P20 | 01A | PI | P09 | P | E | 30 | 27 | E5B5 |  |  |  |  |  |  |  |  |
| EM01BPI143 | 01B OP's & Serv. Model Review Comments Resolution | 5d | 2006-07-27 A | 2006-08-21 A | EM01BPI141 | 100% | 2006-07-27 | 2006-08-02 |  | EBWK 5 Day MEC Holidays | 2006-07-29 | 134 | 0 | 0 | 01A | PI134 | 01 | EM | P20 | 01B | PI | P10 | P | E | 30 | 27 | E5B5 |  |  |  |  |  |  |  |  |
| EM01API143 | 01A OP's & Serv. Model Review Comments Resolution | 5d | 2006-07-28 A | 2006-08-14 A | EM01API141 | 100% | 2006-08-21 | 2006-08-25 |  | EBWK 5 Day MEC Holidays | 2006-07-29 | 134 | 0 | 0 | 01A | PI134 | 01 | EM | P20 | 01A | PI | P10 | P | E | 30 | 27 | E5B5 |  |  |  |  |  |  |  |  |
| EM01DPI141 | 01D Detail OP's & Services Model Review Mtg | 5d | 2006-08-03 A | 2006-08-31 A | EM01DPI134, EM01DSY172 | 100% | 2006-08-03 | 2006-08-09 |  | EBWK 5 Day MEC Holidays | 2006-07-29 | 134 | 0 | 0 | 01A | PI134 | 01 | EM | P20 | 01D | PI | P09 | P | E | 30 | 27 | E5B5 |  |  | 4 | 5 | 10 |  | 70 |  |
| EM01API132 | 01A Planning Release | 1d | 2006-08-04 A | 2006-08-04 A | EK01API050 | 100% | 2006-08-08 | 2006-08-08 |  | EBWK 5 Day MEC Holidays | 2006-07-29 | 132 | 0 | 0 | 01A | PI132 | 01 | EM | P20 | 01A | PI | P07 | P | E | 30 | 27 | E5B5 |  | PS |  |  |  |  |  |  |
| EM01API135 | 01A A/G Piping Iso's - Issue IFC | 5d | 2006-08-14 A | 2006-09-01 A | EK01API144 FF+5d | 100% | 2006-08-25 | 2006-08-31 |  | EBWK 5 Day MEC Holidays | 2006-07-29 | 135 | 0 | 0 | 01A | PI135 | 01 | EM | P50 | 01A | PI | P13 | P | E | 30 | 27 | E5B5 |  | PS |  |  |  | 5 |  |  |
| EM01API138 | 01A Design / Issue Pipe Supports IFC | 25d | 2006-08-14 A | 2006-09-01 A | EK000PI051, EM01API134 SS, EM01API135 FF | 100% | 2006-08-25 | 2006-09-28 |  | EBWK 5 Day MEC Holidays | 2006-07-29 | 138 | 0 | 0 | 01A | PI138 | 01 | EM | P60 | 01A | PI | P14 | P | E | 30 | 27 | E5B5 |  | PS |  |  |  | 44 |  |  |
| EM01JPI135 | 01J A/G Piping Iso's - Issue IFC | 5d | 2006-08-14 A | 2006-08-21 A | EM01JPI134 SS+10d, EM01JPI134 FF, EM01JPI136, EK01JPI143 SS+10d | 100% | 2006-08-17 | 2006-08-23 |  | EBWK 5 Day MEC Holidays | 2006-07-29 | 135 | 0 | 0 | 01J | PI135 | 01 | EM | P50 | 01J | PI | P13 | P | E | 37 | 11 | E5B5 |  | PS |  |  |  | 5 |  |  |
| EM01JPI138 | 01J Design / Issue Pipe Supports IFC | 20d | 2006-08-14 A | 2006-08-21 A | EK000PI051 FF, EM01JPI132, EM01JPI135 FF, EM01JPI134 SS | 100% | 2006-08-17 | 2006-09-13 |  | EBWK 5 Day MEC Holidays | 2006-07-29 | 138 | 0 | 0 | 01J | PI138 | 01 | EM | P60 | 01J | PI | P14 | P | E | 37 | 11 | E5B5 |  | PS |  |  |  | 40 |  |  |
| EM01BPI135 | 01B A/G Piping Iso's - Issue IFC | 15d | 2006-08-21 A | 2006-12-15 A | EM01BMD229 FF, EK01BPI144 FF | 100% | 2006-08-28 | 2006-09-15 |  | EBWK 5 Day MEC Holidays | 2006-07-29 | 135 | 0 | 0 | 01B | PI135 | 01 | EM | P50 | 01B | PI | P13 | P | E | 16 | 18 | E5B5 |  | PS |  |  |  | 5 |  |  |
| EM01BPI138 | 01B Design / Issue Pipe Supports IFC | 20d | 2006-08-21 A | 2006-12-15 A | EK000PI051 FF, EM01BPI134 SS, EM01BPI135 FF | 100% | 2006-08-28 | 2006-09-22 |  | EBWK 5 Day MEC Holidays | 2006-07-29 | 138 | 0 | 0 | 01B | PI138 | 01 | EM | P60 | 01B | PI | P14 | P | E | 16 | 18 | E5B5 |  | PS |  |  |  | 60 |  |  |
| EM01API136 | 01A IDP - Detail Design | 2d | 2006-08-21 A | 2006-08-28 A | EM01API143 | 100% | 2006-08-21 | 2006-08-22 |  | EBWK 5 Day MEC Holidays | 2006-07-29 | 132 | 0 | 0 | 01A | PI132 | 01 | EM | P50 | 01A | PI | P11 | P | E | 30 | 27 | E5B5 |  |  |  |  |  |  |  |  |
| EM01BPI136 | 01B IDP - Detail Design | 2d | 2006-08-22 A | 2006-09-11 A | EM01BPI143 | 100% | 2006-08-22 | 2006-08-23 |  | EBWK 5 Day MEC Holidays | 2006-07-29 | 132 | 0 | 0 | 01A | PI132 | 01 | EM | P50 | 01B | PI | P11 | P | E | 16 | 18 | E5B5 |  |  |  |  |  |  |  |  |
| EM01DPI143 | 01D OP's & Serv. Model Review Comments Resolution | 5d | 2006-09-01 A | 2006-09-13 A | EM01DPI141 | 100% | 2006-08-28 | 2006-09-01 |  | EBWK 5 Day MEC Holidays | 2006-07-29 | 134 | 0 | 5 | 01A | PI134 | 01 | EM | P20 | 01D | PI | P10 | P | E | 30 | 27 | E5B5 |  |  | 4 | 5 | 10 |  | 70 |  |
| EM01DPI135 | 01D A/G Piping Iso's - Issue IFC | 10d | 2006-09-14 A | 2006-12-08 A | EK01DPI144 FF | 100% | 2006-09-06 | 2006-09-19 |  | EBWK 5 Day MEC Holidays | 2006-07-29 | 135 | 0 | 0 | 01D | PI135 | 01 | EM | P50 | 01D | PI | P13 | P | E | 10 | 31 | E5B5 |  | PS | 8 | 10 | 15 | 5 |  |  |
| EM01DPI138 | 01D Design / Issue Pipe Supports IFC | 45d | 2006-09-14 A | 2006-12-08 A | EK000PI051, EM01DPI135 FF | 100% | 2006-09-25 | 2006-11-28 |  | EBWK 5 Day MEC Holidays | 2006-07-29 | 138 | 0 | 0 | 01D | PI138 | 01 | EM | P60 | 01D | PI | P14 | P | E | 10 | 31 | E5B5 |  | PS |  |  |  | 65 |  | 17 |
| EM01DPI136 | 01D IDP - Detail Design | 2d | 2006-09-14 A | 2006-12-08 A | EM01DPI143 | 100% | 2006-09-14 | 2006-09-15 |  | EBWK 5 Day MEC Holidays | 2006-07-29 | 132 | 0 | 0 | 01A | PI132 | 01 | EM | P50 | 01D | PI | P11 | P | E | 10 | 31 | E5B5 |  |  | 1 | 2 | 5 |  |  |  |
| EM04API200 | 04A Issue U/G Material Final Release | 10d | 2006-10-16 A | 2006-10-27 A | EM04API138 | 100% |  |  |  | EBWK 5 Day MEC Holidays | 2006-07-29 |  | 0 | 0.3 |  |  | 01 | EM | U20 | 04A | PI | P13 | U | E | 2 | 2 | E5B5 | 01U |  |  |  |  |  |  |  |
| EM01CPI134 | 01C Detail Model Development | 15d | 2006-10-30 A | 2006-11-09 A | EM01CPI120 FF, EK01CIC300 FF+3d, PK01CMUV01 FS+10d | 100% | 2006-10-30 | 2006-11-21 |  | EBWK 5 Day MEC Holidays | 2006-07-29 | 134 | 0 | 0 | 01C | PI134 | 01 | EM | P50 | 01C | PI | P08 | P | E | 21 | 24 | E5B5 |  |  |  |  |  |  |  |  |
| EM01CPI141 | 01C Detail OP's & Services Model Review Mtg | 2d | 2006-12-05 A | 2006-12-06 A | EM01CPI134 FF | 100% |  |  | start on or after 2006-11-27 | EBWK 5 Day MEC Holidays | 2006-07-29 | 130 | 0 | 0 | 01C | PI130 | 01 | EM | P20 | 01C | PI | P09 | P | E | 21 | 24 | E5B5 |  |  |  |  |  |  |  |  |
| EM01CPI142 | 01C OP's & Serv. Model Review Comment Resolution | 2d | 2006-12-07 A | 2006-12-07 A | EM01CPI141 | 100% | 2006-12-07 | 2006-12-08 | start on or after 2006-11-27 | EBWK 5 Day MEC Holidays | 2006-07-29 | 130 | 0 | 0 | 01C | PI130 | 01 | EM | P20 | 01C | PI | P10 | P | E | 21 | 24 | E5B5 |  |  |  |  |  |  |  |  |
| EM01CPI132 | 01C Planning Release | 1d | 2006-12-11 A | 2006-12-18 A | EM01CPI120 FS+2d | 100% | 2006-12-11 | 2006-12-11 | start on or after 2006-11-27 | 1. Standard 5 Day Workweek | 2006-07-29 | 132 | 0 | 0 | 01C | PI132 | 01 | EM | P20 | 01C | PI | P07 | P | E | 21 | 24 | E5B5 |  | PS |  |  |  |  |  |  |
| EM01CPI136 | 01C IDP - Detail Design | 5d | 2006-12-11 A | 2006-12-13 A | EM01CPI134, EM01CPI142 SS | 100% | 2006-12-11 | 2006-12-18 |  | EBWK 5 Day MEC Holidays | 2006-07-29 | 132 | 0 | 0 | 01A | PI132 | 01 | EM | P50 | 01C | PI | P11 | P | E | 21 | 24 | E5B5 |  |  |  |  |  |  |  |  |
| EM01CPI135 | 01C A/G Piping Iso's - Issue IFC | 15d | 2007-01-01 A | 2007-01-29 A | EM01CPI136, EK01CPI143 | 100% | 2007-01-01 | 2007-01-19 |  | EBWK 5 Day MEC Holidays | 2006-07-29 | 135 | 0 | 0 | 01C | PI135 | 01 | EM | P50 | 01C | PI | P13 | P | E | 21 | 24 | E5B5 |  | PS |  |  |  | 5 |  |  |
| EM01CPI138 | 01C Design / Issue Pipe Supports IFC | 40d | 2007-01-01 A | 2007-01-26 A | EK000PI051 FF, EM01CPI132, EM01CPI135 SS | 100% | 2007-01-01 | 2007-02-23 |  | EBWK 5 Day MEC Holidays | 2006-07-29 | 138 | 0 | 0 | 01C | PI138 | 01 | EM | P60 | 01C | PI | P14 | P | E | 21 | 24 | E5B5 |  | PS |  |  |  | 34 |  |  |

Notes:
- EM01JPI130: user_text1: Site info required, raw water feed, near ammonia product line
- EM01YPI135: user_text1: 88% Complete as of July 27th.
- EM01API135: user_text1: 100% Complete.
- EM01API138: user_text1: 100% Complete.
- EM01JPI135: user_text1: 100% Complete as of Aug 24th. August Milestone.
- EM01JPI138: user_text1: 100% Complete as of Aug 24th. August Milestone.
- EM01BPI135: user_text1: 99% Complete as of Dec 14th.
- EM01BPI138: user_text1: 99% Complete as of Dec 14th.
- EM01DPI135: user_text1: 100% Complete as of Dec 7th.
- EM01DPI138: user_text1: 100% Complete as of Dec 7th.
- EM01DPI136: user_text1: MEC 2nd Round
- EM01CPI135: user_text1: 100% Complete as of Jan 13th.
- EM01CPI138: user_text1: 100% Complete as of Jan 13th.

| ID | WBS | Activity | Type | Duration | Start | Finish | Predecessors | Complete | Planned start | Planned finish | Constraint | zData Date | Sequence | PCA Criticality Index | PCA Duration Sensitivity | User Defined Field 1 | User Definer Field 2 | EB02 - UNIT | EB01 - RESP | EB06 - WORK OP | EB03 - AREA | EB05 - DISCIPLINE | EB10 - KEY | EB04 - CLASS | EB11 - FLAG | EB00 - EPC | EB15 - Civil / U/G Path of Construction | EB16 - Piping Path of Construction | EB17 - Suffix | user_text1 | user_integer2 | EB08 - TAG | EB14 - RISK | Optimistic Duration | Most Likely Duration | Pessimistic Duration | user_integer1 |
| --- | --- | --- | --- | --- | --- | --- | --- | --- | --- | --- | --- | --- | --- | --- | --- | --- | --- | --- | --- | --- | --- | --- | --- | --- | --- | --- | --- | --- | --- | --- | --- | --- | --- | --- | --- | --- | --- |
|  | PR | **Process Engineering** |  |  |  |  |  |  |  |  |  |  |  |  |  |  |  |  |  |  |  |  |  |  |  |  |  |  |  |  |  |  |  |  |  |  |  |
|  | SE | **Safety Engineering** |  |  |  |  |  |  |  |  |  |  |  |  |  |  |  |  |  |  |  |  |  |  |  |  |  |  |  |  |  |  |  |  |  |  |  |
|  | SY | **Systems Engineering** |  |  | 2006-05-02 | 2006-12-15 |  |  |  |  |  |  |  |  |  |  |  |  |  |  |  |  |  |  |  |  |  |  |  |  |  |  |  |  |  |  |  |
| EM01JSY172 |  | 01J P&IDs & Line List Issue - IFD | milestone | 0d | 2006-05-02 A | 2006-05-02 A | EK01JSY170 FF, EK000SY095 | 100% | 2006-06-27 | 2006-06-27 |  | 2006-07-29 | 172 | 0 | 0 | 01J | SY172 | 01 | EM | YP0 | 01J | SY | Y3 | Y | PS | E | 37 | 11 | E5B5 |  |  |  |  |  |  |  |  |
| EM01YSY172 |  | 01Y P&IDs & Line List Issue - IFD | milestone | 0d | 2006-05-02 A | 2006-05-02 A | EK01YSY170 FF, EK000SY095 | 100% | 2006-05-15 | 2006-05-15 |  | 2006-07-29 | 172 | 0 | 0 | 01Y | SY172 | 01 | EM | YP0 | 01Y | SY | Y3 | Y | PS | E | 17 | 10 | E5B5 |  |  |  |  |  |  |  |  |
| EM01BSY172 |  | 01B P&IDs & Line List Issue - IFD | milestone | 0d | 2006-07-19 A | 2006-07-19 A | EK01BSY170 FF, EK000SY095 | 100% | 2006-07-17 | 2006-07-17 |  | 2006-07-29 | 172 | 0 | 0 | 01B | SY172 | 01 | EM | YP0 | 01B | SY | Y3 | Y | PS | E | 16 | 18 | E5B5 | 12-Jul-06 |  |  |  |  |  |  |  |
| EM01ASY172 |  | 01A P&IDs & Line List Issue - IFD | milestone | 0d | 2006-07-26 A | 2006-07-26 A | EK01ASY170 FF, EM01API134 FF, EK000SY095 | 100% | 2006-08-18 | 2006-08-18 |  | 2006-07-29 | 172 | 0 | 0 | 01A | SY172 | 01 | EM | YP0 | 01A | SY | Y3 | Y | PS | E | 30 | 27 | E5B5 |  |  |  |  |  |  |  |  |
| EM01YSY272 |  | 01Y P&IDs & Line List Issue - IFC | milestone | 0d | 2006-07-31 A | 2006-07-31 A | EM01YSY172 FF, EM01YPI135 FF+10d | 100% | 2006-08-11 | 2006-08-11 |  | 2006-07-29 | 172 | 0 | 0 | 01Y | SY172 | 01 | EM | YP0 | 01Y | SY | Y4 | Y | PS | E | 17 | 10 | E5B5 |  |  |  |  |  |  |  |  |
| EM01DSY172 |  | 01D P&IDs & Line List Issue - IFD | milestone | 0d | 2006-08-02 A | 2006-08-02 A | EK01DSY170 FF, EK000SY095 | 100% | 2006-08-01 | 2006-08-01 |  | 2006-07-29 | 172 | 0 | 0 | 01D | SY172 | 01 | EM | YP0 | 01D | SY | Y3 | Y | PS | E | 10 | 31 | E5B5 |  |  |  |  |  |  |  |  |
| EM01JSY272 |  | 01J P&IDs & Line List Issue - IFC | milestone | 0d | 2006-08-03 A | 2006-08-03 A | EM01JSY172 FF, EM01JPI135 FF+10d | 100% | 2006-09-01 | 2006-09-01 |  | 2006-07-29 | 172 | 0 | 0 | 01J | SY172 | 01 | EM | YP0 | 01J | SY | Y4 | Y | PS | E | 37 | 11 | E5B5 |  |  |  |  |  |  |  |  |
| EM01ASY272 |  | 01A P&IDs & Line List Issue - IFC | milestone | 0d | 2006-09-29 A | 2006-09-29 A | EM01ASY172 FF, EM01API135 FF+10d | 100% |  |  |  | 2006-07-29 |  | 0 | 0 |  |  | 01 | EM | YP0 | 01A | SY | Y4 | Y | PS | E |  |  | E5B5 |  |  |  |  |  |  |  |  |
| EM01BSY272 |  | 01B P&IDs & Line List Issue - IFC | milestone | 0d | 2006-09-29 A | 2006-09-29 A | EM01BSY172 FF, EM01BPI135 FF+10d | 100% | 2006-10-20 | 2006-10-20 |  | 2006-07-29 | 172 | 0 | 0 | 01B | SY172 | 01 | EM | YP0 | 01B | SY | Y4 | Y | PS | E | 16 | 18 | E5B5 |  |  |  |  |  |  |  |  |
| EM01CSY172 |  | 01C P&IDs & Line List Issue - IFD | milestone | 0d | 2006-10-11 A | 2006-10-11 A | EK01CSY170 FF, EK000SY095 | 100% | 2006-10-19 | 2006-10-19 |  | 2006-07-29 | 172 | 0 | 0 | 01C | SY172 | 01 | EM | YP0 | 01C | SY | Y3 | Y | PS | E | 21 | 24 | E5B5 |  |  |  |  |  |  |  |  |
| EM01DSY272 |  | 01D P&IDs & Line List Issue - IFC | milestone | 0d | 2006-12-04 A | 2006-12-04 A | EM01DSY172 FF, EM01DPI135 FF | 100% | 2006-12-01 | 2006-12-01 |  | 2006-07-29 | 172 | 0 | 0 | 01D | SY172 | 01 | EM | YP0 | 01D | SY | Y4 | Y | PS | E | 10 | 31 | E5B5 |  |  |  |  |  |  |  |  |
| EM01CSY272 |  | 01C P&IDs & Line List Issue - IFC | milestone | 0d | 2006-12-15 A | 2006-12-15 A | EM01CSY172 FF, EM01CPI135 FF | 100% |  |  |  | 2006-07-29 | 172 | 0 | 0 | 01C | SY172 | 01 | EM | YP0 | 01C | SY | Y4 | Y | PS | E | 21 | 24 | E5B5 |  |  |  |  |  |  |  |  |
|  | 03 | **Utility Plant** |  |  | 2005-07-15 | 2007-03-08 |  |  |  |  |  |  |  |  |  |  |  |  |  |  |  |  |  |  |  |  |  |  |  |  |  |  |  |  |  |  |  |
|  | AR | **Architecture Engineering** |  |  |  |  |  |  |  |  |  |  |  |  |  |  |  |  |  |  |  |  |  |  |  |  |  |  |  |  |  |  |  |  |  |  |  |
|  | PE | **Project Engineering** |  |  |  |  |  |  |  |  |  |  |  |  |  |  |  |  |  |  |  |  |  |  |  |  |  |  |  |  |  |  |  |  |  |  |  |
|  | PS | **Planning & Scheduling** |  |  |  |  |  |  |  |  |  |  |  |  |  |  |  |  |  |  |  |  |  |  |  |  |  |  |  |  |  |  |  |  |  |  |  |
|  | QM | **Quality Mgmt.** |  |  |  |  |  |  |  |  |  |  |  |  |  |  |  |  |  |  |  |  |  |  |  |  |  |  |  |  |  |  |  |  |  |  |  |
|  | CE | **Chief Engineering** |  |  |  |  |  |  |  |  |  |  |  |  |  |  |  |  |  |  |  |  |  |  |  |  |  |  |  |  |  |  |  |  |  |  |  |
|  | CV | **Civil Engineering** |  |  | 2005-10-24 | 2006-12-20 |  |  |  |  |  |  |  |  |  |  |  |  |  |  |  |  |  |  |  |  |  |  |  |  |  |  |  |  |  |  |  |
| EM03DCV160 |  | 03D Design & Model Major Eq. Fdns |  | 26d | 2005-10-24 A | 2005-12-14 A | EM03DPI120 SS+27d | 100% | 2005-10-24 | 2005-11-28 |  | 2006-07-29 | 160 | 0 | 0 | 03D | CV160 | 03 | EM | C30 | 03D | CV | C3 | C |  | E | 12 | 32 | E5B5 |  |  |  |  |  |  |  |  |
| EM03CCV110 |  | 03C Design & Model Containment Area |  | 41d | 2005-12-19 A | 2006-03-27 A | EM03CPI120 SS+19d | 100% | 2005-12-19 | 2006-02-15 |  | 2006-07-29 | 160 | 0 | 0 | 01B | CV160 | 03 | EM | C20 | 03C | CV | C3 | C |  | E | 31 | 14 | E5B5 |  |  |  |  |  |  |  |  |
| EM03CCV160 |  | 03C Design & Model Major Eq. Fdns |  | 20d | 2005-12-19 A | 2006-02-17 A | EM03CPI120 SS+10d, PM000MD46N FF+10d | 100% | 2005-12-19 | 2006-01-17 |  | 2006-07-29 | 160 | 0 | 0 | 03C | CV160 | 03 | EM | C30 | 03C | CV | C3 | C |  | E | 31 | 14 | E5B5 |  |  |  |  |  |  |  |  |
| EM03YCV130 |  | 03Y Design & Model Structural Piperack Fdns |  | 26d | 2005-12-19 A | 2006-01-23 A | EM03YPI120 SS | 100% | 2005-12-19 | 2006-01-25 |  | 2006-07-29 | 125 | 0 | 0 | 01Y | CV125 | 03 | EM | C40 | 03Y | CV | C3 | C |  | E | 13 | 12 | E5B5 |  |  |  |  |  |  |  |  |
| EM03BCV110 |  | 03B Design & Model Sumps |  | 20d | 2006-01-30 A | 2006-07-28 A | EM03BPI120 FF | 100% | 2006-03-06 | 2006-03-31 |  | 2006-07-29 | 160 | 0 | 0 | 01B | CV160 | 03 | EM | C20 | 03B | CV | C3 | C |  | E | 20 | 23 | E5B5 | If info provided from Sys & Pipe. |  |  |  |  |  |  |  |
| EM03FCV160 |  | 03F Design & Model Major Eq. Fdns |  | 21d | 2006-02-07 A | 2006-06-12 A | EM03FPI120 FF | 100% | 2006-04-04 | 2006-05-02 |  | 2006-07-29 | 160 | 0 | 0 | EM200 | CV160 | 03 | EM | C30 | 03F | CV | C3 | C |  | E | 26 | 38 | E5B5 | Piping Supersketch Revision + 3 weeks |  |  |  |  |  |  |  |
| EM03ECV110 |  | 03E Design & Model Containment Area |  | 50d | 2006-03-27 A | 2006-07-11 A | EM03EPI120 FF, PK03EMUV02 FF+10d | 100% | 2006-03-27 | 2006-06-02 |  | 2006-07-29 | 160 | 0 | 0 | 01B | CV160 | 03 | EM | C20 | 03E | CV | C3 | C |  | E | 35 | 33 | E5B5 |  |  |  |  |  |  |  |  |
| EM03DCV163 |  | 03D MF302 2002-F Demineralized Water Tank - Dwgs-IFC |  | 20d | 2006-04-17 A | 2006-04-28 A | EM03DPI132, EK000CV045, EM03DPI200 FF+10d, PK03DMF00 FF+10d | 100% | 2006-06-19 | 2006-07-14 |  | 2006-07-29 | 164 | 0 | 0 | 03D | CV164 | 03 | EM | C30 | 03D | CV | C5 | C |  | E | 12 | 32 | E5B5 |  | 10 | 2002F |  |  |  |  |  |
| EM03CCV164 |  | 03C Update Model Major Eq. Fdns & Issue Dwgs-IFC |  | 30d | 2006-04-24 A | 2006-05-12 A | EM03CCV160 FF+15d, EM03CPI132, EK000CV045, EM03CPI200 FF+10d, EM03UPIASF SS+10d, EM03UPIFWF FF+10d, EM03UPIOSF SS+10d, PK000MJ36J FF+10d, PK000MJ36N FF+10d, PK03CMD06 FF+10d, PK03CMD07 FF+10d, PK03CMJV02 FF+10d | 100% | 2006-05-19 | 2006-06-29 |  | 2006-07-29 | 164 | 0 | 0 | 03C | CV164 | 03 | EM | C30 | 03C | CV | C5 | C |  | E | 31 | 14 | E5B5 |  | 10 |  |  |  |  |  |  |
| EM03CCV126 |  | 03C Conceptual Misc. Steel Design/ Model |  | 20d | 2006-05-11 A | 2006-06-07 A | EM03CPI132 | 100% |  |  |  | 2006-07-29 | 126 | 0 | 0 | 03C | CV126 | 03 | EM | S30 | 03C | CV | C2 | S |  | E | 31 | 14 | E5B5 |  |  |  |  |  |  |  |  |
| EM03CCV166 |  | 03C Conceptual Misc. Foundations Design/ Model |  | 15d | 2006-05-17 A | 2006-06-07 A | EM03CCV160 FF+10d, EM03CPI132 | 100% | 2006-05-18 | 2006-06-07 |  | 2006-07-29 | 166 | 0 | 0 | 03C | CV166 | 03 | EM | C60 | 03C | CV | C3 | C |  | E | 31 | 14 | E5B5 |  |  |  |  |  |  |  |  |
| EM03YCV120 |  | 03Y Design & Model Major Structural Steel |  | 26d | 2006-05-17 A | 2006-06-21 A | EM03YPI120 FF | 100% |  |  |  | 2006-07-29 | 120 | 0 | 0 | 03Y | CV120 | 03 | EM | S10 | 03Y | CV | C2 | S |  | E | 13 | 12 | E5B5 |  |  |  |  |  |  |  |  |
| EM03DCV164 |  | 03D Update Model Major Eq. Fdns & Issue Dwgs-IFC |  | 30d | 2006-06-05 A | 2006-07-27 A | EM03DCV160, EM03DPI132, EK000CV045, EM03DPI200 FF+10d, EM03UPIASF FF+10d, EM03UPIFWF FF+10d, EM03UPIOSF FF+10d, PK000MJ36J FF+10d, PK000MJ36N FF+10d, PK03DMF01 FF+10d, PK03DMJV02 FF+10d | 100% | 2006-06-05 | 2006-07-14 |  | 2006-07-29 | 164 | 0 | 0 | 03D | CV164 | 03 | EM | C30 | 03D | CV | C5 | C | PS | E | 12 | 32 | E5B5 |  | 10 |  |  |  |  |  |  |
| EM03FCV164 |  | 03F Update Model Major Eq. Fdns & Issue Dwgs-IFC |  | 10d | 2006-06-09 A | 2006-07-31 A | EM03FCV160, EK000CV045, EM03UPIASF FF+10d, EM03UPIFWF FF+10d, EM03UPIOSF FF+10d, PK000MU41N FF+10d, PK03FMD03 FF+10d, PK03FMUV02 FF+10d, PK03FMUV05 FF+10d, PK03FMUV08 FF+10d | 100% | 2006-07-10 | 2006-07-21 |  | 2006-07-29 | 164 | 0 | 0 | EM200 | CV164 | 03 | EM | C30 | 03F | CV | C5 | C | PS | E | 26 | 38 | E5B5 | Excluding Fan FDN's. Waiting on Equip. Loc. Plans. | 10 |  | 17 |  |  |  |  |
| EM03ECV160 |  | 03E Design & Model Major Eq. Fdns |  | 26d | 2006-06-26 A | 2006-09-04 A | EM03EPI120, PK03EMUV02 FF+10d | 100% | 2006-06-26 | 2006-07-31 |  | 2006-07-29 | 160 | 0 | 0 | 03E | CV160 | 03 | EM | C30 | 03E | CV | C3 | C | CD | E | 35 | 33 | E5B5 |  |  |  |  | 60 | 70 | 90 | 77 |
| EM03DCV126 |  | 03D Conceptual Misc. Steel Design/ Model |  | 20d | 2006-07-06 A | 2006-08-04 A | EM03DPI132 | 100% | 2006-07-06 | 2006-08-02 |  | 2006-07-29 | 126 | 0 | 0 | 03D | CV126 | 03 | EM | S30 | 03D | CV | C2 | S |  | E | 12 | 32 | E5B5 |  |  |  |  |  |  |  |  |
| EM03ECV112 |  | 03E Update Model Containment Area & Issue Dwgs-IFC |  | 31d | 2006-07-14 A | 2006-12-11 A | EM03ECV110, EK000CV045, EM03EPI200 FF+2d | 100% | 2006-07-14 | 2006-08-25 |  | 2006-07-29 | 164 | 0 | 0 | 01B | CV164 | 03 | EM | C20 | 03E | CV | C5 | C | PS | E | 35 | 33 | E5B5 |  | 10 |  |  |  |  |  |  |
| EM03DCV166 |  | 03D Conceptual Misc. Foundations Design/ Model |  | 15d | 2006-07-18 A | 2006-08-04 A | EM03DCV160 FF+10d, EM03DPI132 | 100% | 2006-07-18 | 2006-08-07 |  | 2006-07-29 | 166 | 0 | 0 | 03D | CV166 | 03 | EM | C60 | 03D | CV | C3 | C |  | E | 12 | 32 | E5B5 |  |  |  |  |  |  |  |  |
| EM03CCV127 |  | 03C Model Misc. Steel & Issue Dwgs - IFC |  | 5d | 2006-07-20 A | 2006-09-04 A | EM03CCV126, EM03CPI135 FF+6d | 100% | 2006-07-31 | 2006-08-04 |  | 2006-07-29 | 127 | 0 | 0 | 03C | CV127 | 03 | EM | S30 | 03C | CV | C4 | S | PS | E | 31 | 14 | E5B5 |  | 5 |  |  |  |  |  |  |
| EM03CCV167 |  | 03C Update Model Misc Fdns & Issue Dwgs - IFC |  | 5d | 2006-07-20 A | 2006-09-05 A | EM03CCV166, EM03CCV127 FF, EK000CV045, EM03CPI135 FF+6d | 100% | 2006-07-31 | 2006-08-04 |  | 2006-07-29 | 167 | 0 | 0 | 03C | CV167 | 03 | EM | C60 | 03C | CV | C5 | C | PS | E | 31 | 14 | E5B5 |  | 5 |  |  |  |  |  |  |
| EM03YCV133 |  | 03Y Update Model Piperack Fdns & Issue Dwgs - IFC |  | 19d | 2006-07-27 A | 2006-10-12 A | EM03YCV130, EM03YPI132 SS, EK000CV045, EM03UPIASF FF+10d, EM03UPIFWF FF+10d, EM03UPIOSF FF+10d, EK030PI012 FF+10d, EK030PI012 F1+10d | 100% | 2006-08-01 | 2006-08-25 |  | 2006-07-29 | 128 | 0 | 0 | 01Y | CV128 | 03 | EM | C40 | 03Y | CV | C5 | C | PS | E | 13 | 12 | E5B5 |  | 10 |  |  |  |  |  |  |
| EM03ACV160 |  | 03A Design & Model Major Eq. Fdns |  | 26d | 2006-08-01 A | 2006-09-29 A | EM03API120 FS+10d | 100% | 2006-08-04 | 2006-09-08 |  | 2006-07-29 | 160 | 0 | 0 | 03A | CV160 | 03 | EM | C30 | 03A | CV | C3 | C |  | E | 25 | 13 | E5B5 |  |  |  |  |  |  |  |  |
| EM03BCV112 |  | 03B Update Model Sumps & Issue Dwgs-IFC |  | 10d | 2006-08-04 A | 2006-11-03 A | EM03BCV110, EM03BPI132 SS, EK000CV045, EM03BPI200 FF, PK03BMUV02 FF+10d, PK03BMUV05 FF+10d | 100% | 2006-08-23 | 2006-09-05 |  | 2006-07-29 | 164 | 0 | 0 | 01B | CV164 | 03 | EM | C20 | 03B | CV | C5 | C | PS | E | 20 | 23 | E5B5 |  | 10 |  |  |  |  |  |  |
| EM03ACV164 |  | 03A Update Model Major Eq. Fdns & Issue Dwgs-IFC |  | 24d | 2006-08-21 A | 2006-10-06 A | EM03ACV160 FF+5d, EM03API132, EK000CV045, EM03API200 FF+10d, EM03UPIASF FF+10d, EM03UPIFWF FF+10d, EM03UPIOSF FF+10d, PK03AMLV02 FF+10d | 100% | 2006-09-11 | 2006-10-12 |  | 2006-07-29 | 164 | 0 | 0 | 03A | CV164 | 03 | EM | C30 | 03A | CV | C5 | C | PS | E | 25 | 13 | E5B5 |  | 10 |  |  |  |  |  |  |
| EM03FCV166 |  | 03F Conceptual Misc. Foundations Design/ Model |  | 15d | 2006-08-21 A | 2006-09-15 A | EM03FCV160 FF+10d, EM03FPI132, EM03FPI136 SS+5d | 100% | 2006-08-21 | 2006-09-08 |  | 2006-07-29 | 166 | 0 | 0 | EM200 | CV166 | 03 | EM | C60 | 03F | CV | C3 | C |  | E | 26 | 38 | E5B5 |  |  |  |  |  |  |  |  |
| EM03FCV126 |  | 03F Conceptual Misc. Steel Design/ Model |  | 20d | 2006-08-28 A | 2006-11-24 A | EM03FPI132, EM03FPI136 FF+15d | 100% | 2006-08-28 | 2006-09-22 |  | 2006-07-29 | 126 | 0 | 0 | EM200 | CV126 | 03 | EM | S30 | 03F | CV | C2 | S |  | E | 26 | 38 | E5B5 |  |  |  |  |  |  |  |  |
| EM03YCV122 |  | 03Y Update Model Struct Steel & Issue Dwgs - IFC |  | 21d | 2006-09-05 A | 2006-11-03 A | EM03YCV120, EM03YPI132, EM03YPI136 FF+5d, EM03UPIASF FF+15d, EM03UPIFWF FF+15d, EM03UPIOSF FF+15d, EK030PI012 FF+15d, EK030PI012 F1+15d | 100% | 2006-09-05 | 2006-10-03 |  | 2006-07-29 | 122 | 0 | 0 | 03Y | CV122 | 03 | EM | S10 | 03Y | CV | C4 | S | PS | E | 13 | 12 | E5B5 |  | 10 |  |  |  |  |  |  |
| EM03BCV126 |  | 03B Conceptual Misc. Steel Design/ Model |  | 20d | 2006-09-15 A | 2006-10-05 A | EM03BPI132, EM03BPI136 FF+5d | 100% | 2006-09-11 | 2006-10-06 |  | 2006-07-29 | 126 | 0 | 0 | 03B | CV126 | 03 | EM | S30 | 03B | CV | C2 | S |  | E | 20 | 23 | E5B5 |  |  |  |  |  |  |  |  |
| EM03BCV166 |  | 03B Conceptual Misc. Foundations Design/ Model |  | 15d | 2006-09-15 A | 2006-10-04 A | EM03BPI132, EM03BPI136 FF+5d, EM03BPI120 SF+51d | 100% | 2006-09-11 | 2006-09-29 |  | 2006-07-29 | 166 | 0 | 0 | 03B | CV166 | 03 | EM | C60 | 03B | CV | C3 | C |  | E | 20 | 23 | E5B5 |  |  |  |  |  |  |  |  |
| EM03ECV126 |  | 03E Conceptual Misc. Steel Design/ Model |  | 20d | 2006-09-18 A | 2006-11-24 A | EM03EPI132, EM03EPI136 FF+5d | 100% | 2006-09-18 | 2006-10-13 |  | 2006-07-29 | 126 | 0 | 0 | 03E | CV126 | 03 | EM | S30 | 03E | CV | C2 | S |  | E | 35 | 33 | E5B5 |  |  |  |  | 15 | 20 | 25 |  |
| EM03ECV166 |  | 03E Conceptual Misc. Foundations Design/ Model |  | 15d | 2006-09-19 A | 2006-11-24 A | EM03ECV160 FF+10d, EM03EPI132, EM03EPI136 FF+5d | 100% | 2006-09-19 | 2006-10-09 |  | 2006-07-29 | 166 | 0 | 0 | 03E | CV166 | 03 | EM | C60 | 03E | CV | C3 | C |  | E | 35 | 33 | E5B5 |  |  |  |  |  |  |  |  |
| EM03ECV164 |  | 03E Update Model Major Eq. Fdns & Issue Dwgs-IFC |  | 10d | 2006-09-25 A | 2006-10-06 A | EM03ECV160, EM03EPI132, EK000CV045, EM03EPI200 FF+5d, EM03UPIASF FF+10d, EM03UPIFWF FF+10d, EM03UPIOSF FF+10d, PK03EMUV02 FF+10d | 100% | 2006-10-03 | 2006-10-16 | start on or after 2006-09-25 | 2006-07-29 | 164 | 0 | 0 | 03E | CV164 | 03 | EM | C30 | 03E | CV | C5 | C | PS | E | 35 | 33 | E5B5 |  | 10 |  |  |  |  |  |  |
| EM03ACV126 |  | 03A Conceptual Misc. Steel Design/ Model |  | 20d | 2006-09-25 A | 2006-11-10 A | EM03API132, EM03API136 FF+5d | 100% | 2006-09-25 | 2006-10-20 | start on or after 2006-09-18 | 2006-07-29 | 126 | 0 | 0 | 03A | CV126 | 03 | EM | S30 | 03A | CV | C2 | S |  | E | 25 | 13 | E5B5 |  |  |  |  |  |  |  |  |
| EM03ACV166 |  | 03A Conceptual Misc. Foundations Design/ Model |  | 15d | 2006-09-25 A | 2006-11-21 A | EM03ACV160 FF+10d, EM03API132, EM03API136 FF+5d | 100% | 2006-09-25 | 2006-10-13 |  | 2006-07-29 | 166 | 0 | 0 | 03A | CV166 | 03 | EM | C60 | 03A | CV | C3 | C |  | E | 25 | 13 | E5B5 |  |  |  |  |  |  |  |  |
| EM03DCV127 |  | 03D Model Misc. Steel & Issue Dwgs - IFC |  | 5d | 2006-10-05 A | 2006-10-21 A | EM03DCV126 | 100% | 2006-10-16 | 2006-10-20 |  | 2006-07-29 | 127 | 0 | 0 | 03D | CV127 | 03 | EM | S30 | 03D | CV | C4 | S | PS | E | 12 | 32 | E5B5 |  | 5 |  |  |  |  |  |  |
| EM03DCV167 |  | 03D Update Model Misc Fdns & Issue Dwgs - IFC |  | 5d | 2006-10-05 A | 2006-10-21 A | EM03DCV166, EM03DCV127 FF, EK000CV045 | 100% | 2006-10-16 | 2006-10-20 |  | 2006-07-29 | 167 | 0 | 0 | 03D | CV167 | 03 | EM | C60 | 03D | CV | C5 | C | PS | E | 12 | 32 | E5B5 |  | 5 |  |  |  |  |  |  |
| EM03BCV127 |  | 03B Model Misc. Steel & Issue Dwgs - IFC |  | 5d | 2006-11-07 A | 2006-11-10 A | EM03BCV126, EM03BPI135 FF+10d | 100% | 2006-11-07 | 2006-11-13 | start on or after 2006-11-07 | 2006-07-29 | 127 | 0 | 0 | 03B | CV127 | 03 | EM | S30 | 03B | CV | C4 | S | PS | E | 20 | 23 | E5B5 |  | 5 |  |  |  |  |  |  |
| EM03BCV167 |  | 03B Update Model Misc Fdns & Issue Dwgs - IFC |  | 5d | 2006-11-07 A | 2006-11-10 A | EM03BCV166, EM03BCV127 FF, EK000CV045, EM03BPI135 FF+10d | 100% | 2006-11-07 | 2006-11-13 |  | 2006-07-29 | 167 | 0 | 0 | 03B | CV167 | 03 | EM | C60 | 03B | CV | C5 | C | PS | E | 20 | 23 | E5B5 |  | 5 |  |  |  |  |  |  |
| EM03ACV167 |  | 03A Update Model Misc Fdns & Issue Dwgs - IFC |  | 5d | 2006-11-15 A | 2006-11-21 A | EM03ACV166, EM03ACV127 FF, EK000CV045, EM03API135 FF+10d | 100% | 2006-12-27 | 2007-01-02 |  | 2006-07-29 | 167 | 0 | 0 | 03A | CV167 | 03 | EM | C60 | 03A | CV | C5 | C | PS | E | 25 | 13 | E5B5 |  | 5 |  |  |  |  |  |  |
| EM03ACV127 |  | 03A Model Misc. Steel & Issue Dwgs - IFC |  | 5d | 2006-11-15 A | 2006-11-21 A | EM03ACV126 | 100% |  |  |  | 2006-07-29 | 127 | 0 | 0 | 03A | CV127 | 03 | EM | S30 | 03A | CV | C4 | S | PS | E | 25 | 13 | E5B5 |  | 5 |  |  |  |  |  |  |
| EM03ECV127 |  | 03E Model Misc. Steel & Issue Dwgs - IFC |  | 5d | 2006-12-11 A | 2006-12-15 A | EM03ECV126, EM03EPI135 FF+10d | 100% |  |  |  | 2006-07-29 | 127 | 6.6 | 0 | 03E | CV127 | 03 | EM | S30 | 03E | CV | C4 | S | PS | E | 35 | 33 | E5B5 |  | 5 |  |  | 4 | 5 | 10 |  |
| EM03ECV167 |  | 03E Update Model Misc Fdns & Issue Dwgs - IFC |  | 5d | 2006-12-11 A | 2006-12-15 A | EM03ECV166, EK000CV045, EM03EPI135 FF+10d | 100% |  |  |  | 2006-07-29 | 167 | 0 | 0 | 03E | CV167 | 03 | EM | C60 | 03E | CV | C5 | C | PS | E | 35 | 33 | E5B5 |  | 5 |  |  |  |  |  |  |
| EM03FCV127 |  | 03F Model Misc. Steel & Issue Dwgs - IFC |  | 5d | 2006-12-11 A | 2006-12-20 A | EM03FCV126 | 100% | 2006-12-11 | 2006-12-15 | start on or after 2006-12-06 | 2006-07-29 | 127 | 0 | 0 | EM200 | CV127 | 03 | EM | S30 | 03F | CV | C4 | S | PS | E | 26 | 38 | E5B5 |  | 5 |  | 17 |  |  |  |  |
| EM03FCV167 |  | 03F Update Model Misc Fdns & Issue Dwgs - IFC |  | 5d | 2006-12-11 A | 2006-12-20 A | EM03FCV166, EK000CV045, EM03FPI135 FF+10d, EM03FCV127 SS | 100% | 2006-12-11 | 2006-12-15 |  | 2006-07-29 | 167 | 0 | 0 | EM200 | CV167 | 03 | EM | C60 | 03F | CV | C5 | C | PS | E | 26 | 38 | E5B5 |  | 5 |  |  |  |  |  |  |

| ID | WBS | Activity | Duration | Start | Finish | Predecessors | Complete | Planned start | Planned finish | Calendar | zData Date | Sequence | PCA Criticality Index | PCA Duration Sensitivity | User Defined Field 1 | User Definer Field 2 | EB02 - UNIT | EB01 - RESP | EB06 - WORK OP | EB03 - AREA | EB05 - DISCIPLINE | EB04 - CLASS | EB00 - EPC | EB15 - Civil / U/G Path of Construction | EB16 - Piping Path of Construction | EB17 - Suffix | EB07 - REQN | EB10 - KEY | EB09 - IPMS | EB08 - TAG | EB11 - FLAG | Optimistic Duration | Most Likely Duration | Pessimistic Duration | user_integer1 | user_text1 | user_integer2 | user_text2 | EB12 - TEMP | EB19 - System | EB14 - RISK |
| --- | --- | --- | --- | --- | --- | --- | --- | --- | --- | --- | --- | --- | --- | --- | --- | --- | --- | --- | --- | --- | --- | --- | --- | --- | --- | --- | --- | --- | --- | --- | --- | --- | --- | --- | --- | --- | --- | --- | --- | --- | --- |
|  | EL | **Electrical Engineering** |  | 2005-08-01 | 2006-03-31 |  |  |  |  |  |  |  |  |  |  |  |  |  |  |  |  |  |  |  |  |  |  |  |  |  |  |  |  |  |  |  |  |  |  |  |  |
| EM03EEL120 |  | 03E Electrical Conceptual Layouts | 25d | 2005-08-01 A | 2006-03-31 A | EK03EPI030 SS | 100% | 2006-03-06 | 2006-04-07 |  | 2006-07-29 | 120 | 0 | 0 | 03E | EL120 | 03 | EM | P20 | 03E | EL | E | E | 35 | 33 | E5B5 |  |  |  |  |  |  |  |  |  |  |  |  |  |  |  |
| EM03AEL120 |  | 03A Electrical Conceptual Layouts | 40d | 2005-08-23 A | 2005-10-27 A | EK03API030 | 100% | 2005-09-02 | 2005-10-28 |  | 2006-07-29 | 120 | 0 | 0 | 03A | EL120 | 03 | EM | P20 | 03A | EL | E | E | 25 | 13 | E5B5 |  |  |  |  |  |  |  |  |  |  |  |  |  |  |  |
| EM03DEL120 |  | 03D Electrical Conceptual Layouts | 40d | 2005-09-09 A | 2005-11-18 A | EK03DPI030 | 100% | 2005-10-03 | 2005-11-25 |  | 2006-07-29 | 120 | 0 | 0 | 03D | EL120 | 03 | EM | P20 | 03D | EL | E | E | 12 | 32 | E5B5 |  |  |  |  |  |  |  |  |  |  |  |  |  |  |  |
| EM03BEL120 |  | 03B Electrical Conceptual Layouts | 40d | 2005-09-12 A | 2005-11-18 A | EK03BPI030 | 100% | 2005-09-26 | 2005-11-18 |  | 2006-07-29 | 120 | 0 | 0 | 03B | EL120 | 03 | EM | P20 | 03B | EL | E | E | 20 | 23 | E5B5 |  |  |  |  |  |  |  |  |  |  |  |  |  |  |  |
| EM03FEL120 |  | 03F Electrical Conceptual Layouts | 40d | 2005-09-19 A | 2005-11-22 A | EK03FPI030 SS | 100% | 2005-10-10 | 2005-12-02 |  | 2006-07-29 | 120 | 0 | 0 | EK200 | EL120 | 03 | EM | P20 | 03F | EL | E | E | 26 | 38 | E5B5 |  |  |  |  |  |  |  |  |  |  |  |  |  |  |  |
| EM03YEL120 |  | 03Y Electrical Conceptual Layouts | 40d | 2005-09-19 A | 2005-11-10 A | EK030SY050 | 100% | 2005-10-10 | 2005-12-02 |  | 2006-07-29 | 120 | 0 | 0 | 03Y | EL120 | 03 | EM | P20 | 03Y | EL | E | E | 13 | 12 | E5B5 |  |  |  |  |  |  |  |  |  |  |  |  |  |  |  |
| EM03CEL120 |  | 03C Electrical Conceptual Layouts | 35d | 2005-10-31 A | 2005-12-07 A | EK03CPI030 | 100% | 2005-10-31 | 2005-12-16 |  | 2006-07-29 | 120 | 0 | 0 | 03C | EL120 | 03 | EM | P20 | 03C | EL | E | E | 31 | 14 | E5B5 |  |  |  |  |  |  |  |  |  |  |  |  |  |  |  |
|  | EV | **Environmental Engineering** |  |  |  |  |  |  |  |  |  |  |  |  |  |  |  |  |  |  |  |  |  |  |  |  |  |  |  |  |  |  |  |  |  |  |  |  |  |  |  |
|  | FP | **Fire Protection Engineering** |  |  |  |  |  |  |  |  |  |  |  |  |  |  |  |  |  |  |  |  |  |  |  |  |  |  |  |  |  |  |  |  |  |  |  |  |  |  |  |
|  | GE | **General Engineering (All Disciplines)** |  |  |  |  |  |  |  |  |  |  |  |  |  |  |  |  |  |  |  |  |  |  |  |  |  |  |  |  |  |  |  |  |  |  |  |  |  |  |  |
|  | IC | **Control Sytems Engineering** |  |  |  |  |  |  |  |  |  |  |  |  |  |  |  |  |  |  |  |  |  |  |  |  |  |  |  |  |  |  |  |  |  |  |  |  |  |  |  |
|  | MB | **Furnaces & Flares Engineering** |  |  |  |  |  |  |  |  |  |  |  |  |  |  |  |  |  |  |  |  |  |  |  |  |  |  |  |  |  |  |  |  |  |  |  |  |  |  |  |
|  | MC | **Exchangers Engineering** |  |  |  |  |  |  |  |  |  |  |  |  |  |  |  |  |  |  |  |  |  |  |  |  |  |  |  |  |  |  |  |  |  |  |  |  |  |  |  |
|  | MD | **Vessels Engineering** |  | 2006-04-26 | 2006-08-04 |  |  |  |  |  |  |  |  |  |  |  |  |  |  |  |  |  |  |  |  |  |  |  |  |  |  |  |  |  |  |  |  |  |  |  |  |
| EM03CMD229 |  | 03C Vessel Steel Release IFC (MD411 2203-F, 2204-F) | 20d | 2006-04-26 A | 2006-05-29 A | EM03CMD228 | 100% | 2006-06-05 | 2006-06-30 |  | 2006-07-29 | 224 | 0 | 0 |  |  | 03 | EM | MD2 | 03C | MD | M | E | 23 | 19 | E1B1 | P1080 | P16 | M |  |  |  |  |  |  |  |  |  |  |  |  |
| EM03FMD229 |  | 03F Vessel Steel Release IFC (MD411, 2006-F) | 20d | 2006-04-26 A | 2006-05-29 A | EM03FMD228 | 100% | 2006-06-28 | 2006-07-25 |  | 2006-07-29 | 224 | 0 | 0 |  |  | 03 | EM | MD2 | 03F | MD | M | E | 23 | 19 | E1B1 | P1080 | P16 | M | 2006F |  |  |  |  |  |  |  |  |  |  |  |
| EM03BMD229 |  | 03B Vessel Steel Release IFC | 20d | 2006-07-03 A | 2006-08-04 A | EM03BMD228 FF | 100% | 2006-09-29 | 2006-10-26 |  | 2006-07-29 | 224 | 0 | 0 |  |  | 03 | EM | MD2 | 03B | MD | M | E | 23 | 19 | E1B1 | P1080 | P16 | M |  | PS |  |  |  |  |  |  |  |  |  |  |
|  | MJ | **Machinery Engineering** |  |  |  |  |  |  |  |  |  |  |  |  |  |  |  |  |  |  |  |  |  |  |  |  |  |  |  |  |  |  |  |  |  |  |  |  |  |  |  |
|  | PI | **Piping Engineering** |  | 2005-07-15 | 2007-03-08 |  |  |  |  |  |  |  |  |  |  |  |  |  |  |  |  |  |  |  |  |  |  |  |  |  |  |  |  |  |  |  |  |  |  |  |  |
| EM03EPI120 |  | 03E Plant Layout Model | 50d | 2005-07-15 A | 2006-06-27 A | EK020SY145 FF+10d, EK03ESY170 FF+25d, EK030SY050, EM000PI025 FF, PK03EMU100 FF+10d, EK030IC210 FF, EK030I1100 FF, EM03EEL120 FF, EK03EPI030 FF+10d | 100% | 2005-08-29 | 2005-11-08 | EBWK 5 Day MEC Holidays | 2006-07-29 | 120 | 6.2 | 6.2 | 03E | PI120 | 03 | EM | P20 | 03E | PI | P | E | 35 | 33 | E5B5 |  | P02 |  |  | CD | 95 | 110 | 135 | 66 |  |  |  |  |  |  |
| EM03API120 |  | 03A Plant Layout Model | 62d | 2005-08-22 A | 2006-05-29 A | EM03AEL120 FF, EK03API030, EM000PI025 FF, EK03API000 FF+10d | 100% | 2005-08-18 | 2005-11-16 | EBWK 5 Day MEC Holidays | 2006-07-29 | 120 | 0 | 0 | 03A | PI120 | 03 | EM | P20 | 03A | PI | P | E | 25 | 13 | E5B5 |  | P02 |  |  |  |  |  |  |  | 03A ML500 2003-L,Nozzles needed,orientations |  |  |  |  |  |
| EM03YPI120 |  | 03Y Plant Layout Model | 40d | 2005-08-22 A | 2006-06-07 A | EM03YEL120 FF, EK030PI010 SS, EM03FPI120 FF, EM03DPI120 FF, EM03CPI120 FF, EM03API120 FF | 100% | 2005-09-19 | 2005-11-14 | EBWK 5 Day MEC Holidays | 2006-07-29 | 120 | 0 | 5 | 03Y | PI120 | 03 | EM | P20 | 03Y | PI | P | E | 13 | 12 | E5B5 |  | P02 |  |  |  | 20 | 22 | 30 |  |  |  |  |  |  |  |
| EM03DPI120 |  | 03D Plant Layout Model | 85d | 2005-09-07 A | 2006-03-17 A | EK020SY145 FF+10d, EM03DEL120 FF, EK03DPI030, EK03DSY170 FF+15d, PK03DMJ154 FF+9d, EK030SY050, EM000PI025 FF, EK030IC210 FF, EK030I1100 FF | 100% | 2005-09-07 | 2006-01-13 | EBWK 5 Day MEC Holidays | 2006-07-29 | 120 | 0 | 0 | 03D | PI120 | 03 | EM | P20 | 03D | PI | P | E | 12 | 32 | E5B5 |  | P02 |  |  |  |  |  |  |  |  |  |  |  |  |  |
| EM03API123 |  | 03A Plant Layout Nozzle Release | 21d | 2005-09-15 A | 2005-10-28 A | EM03API120 SS+15d | 100% | 2005-09-19 | 2005-10-17 | EBWK 5 Day MEC Holidays | 2006-07-29 | 123 | 0 | 0 | 03A | PI123 | 03 | EM | P20 | 03A | PI | P | E | 25 | 13 | E5B5 |  | P19 |  |  |  |  |  |  |  |  |  |  |  |  |  |
| EM03DPI123 |  | 03D Plant Layout Nozzle Release | 5d | 2005-10-18 A | 2005-10-27 A | EM03DPI120 SS+20d | 100% | 2005-10-18 | 2005-10-24 | EBWK 5 Day MEC Holidays | 2006-07-29 | 123 | 0 | 0 | 03D | PI123 | 03 | EM | P20 | 03D | PI | P | E | 12 | 32 | E5B5 |  | P19 |  |  |  |  |  |  |  |  |  |  |  |  |  |
| EM03CPI120 |  | 03C Plant Layout Model | 35d | 2005-10-31 A | 2006-01-17 A | EM03CEL120 FF, EK03CPI030, PK03CMJ154 FF+9d, EM000PI025 FF | 100% | 2005-10-31 | 2005-12-20 | EBWK 5 Day MEC Holidays | 2006-07-29 | 120 | 0 | 0 | 03C | PI120 | 03 | EM | P20 | 03C | PI | P | E | 31 | 14 | E5B5 |  | P02 |  |  |  |  |  |  |  |  |  |  |  |  |  |
| EM03UPIASB |  | 03U IDP - Plant Layout - Acid Sewer | 5d | 2005-11-01 A | 2005-11-11 A | EM000U000 SS, EM03UPIASC | 100% | 2005-11-21 | 2005-11-25 | EBWK 5 Day MEC Holidays | 2006-07-29 |  | 0 | 0 |  |  | 03 | EM | U20 | 03U | PI | U | E | 1 | 1 | E5B5 |  | P05 |  |  |  |  |  |  |  |  | 16 | EK02UPICBB | X | AS |  |
| EM03UPICSB |  | 03U IDP - Plant Layout - Caustic Sewer | 5d | 2005-11-01 A | 2005-11-11 A | EM03UPICSC | 100% | 2005-11-21 | 2005-11-25 | EBWK 5 Day MEC Holidays | 2006-07-29 |  | 0 | 0 |  |  | 03 | EM | U20 | 03U | PI | U | E | 1 | 1 | E5B5 |  | P05 |  |  |  |  |  |  |  |  | 16 | EK02UPICBB | X | CS |  |
| EM03UPIFWB |  | 03U IDP - Plant Layout - Firewater | 5d | 2005-11-01 A | 2005-11-11 A | EM03UPIFWC | 100% | 2005-11-21 | 2005-11-25 | EBWK 5 Day MEC Holidays | 2006-07-29 |  | 0 | 0 |  |  | 03 | EM | U20 | 03U | PI | U | E | 1 | 1 | E5B5 |  | P05 |  |  |  |  |  |  |  |  | 16 | EK02UPICBB | X | FW |  |
| EM03UPIOSB |  | 03U IDP - Plant Layout - Outfall Sewer | 5d | 2005-11-01 A | 2005-11-11 A | EM03UPIOSC | 100% | 2005-11-21 | 2005-11-25 | EBWK 5 Day MEC Holidays | 2006-07-29 |  | 0 | 0 |  |  | 03 | EM | U20 | 03U | PI | U | E | 1 | 1 | E5B5 |  | P05 |  |  |  |  |  |  |  |  | 16 | EK02UPICBB | X | OS |  |
| EM03UPIASC |  | 03U Model Review Mtg (HOC/MEC) - Acid Sewer | 5d | 2005-11-28 A | 2005-12-02 A | EM000U000 SS, EK03UPIASA | 100% | 2005-11-14 | 2005-11-18 | EBWK 5 Day MEC Holidays | 2006-07-29 |  | 0 | 0 |  |  | 03 | EM | U20 | 03U | PI | U | E | 1 | 1 | E2B2 |  | P03 |  |  |  |  |  |  |  |  | 5 | EK02UPICBC |  | AS |  |
| EM03UPICSC |  | 03U Model Review Mtg (HOC/MEC) - Caustic Sewer | 5d | 2005-11-28 A | 2005-12-02 A | EM000U000 SS, EK03UPICSA | 100% | 2005-11-14 | 2005-11-18 | EBWK 5 Day MEC Holidays | 2006-07-29 |  | 0 | 0 |  |  | 03 | EM | U20 | 03U | PI | U | E | 1 | 1 | E2B2 |  | P03 |  |  |  |  |  |  |  |  | 5 | EK02UPICBC |  | CS |  |
| EM03UPIFWC |  | 03U Model Review Mtg (HOC/MEC) - Firewater | 5d | 2005-11-28 A | 2005-12-02 A | EM000U000 SS, EK03UPIFWA | 100% | 2005-11-14 | 2005-11-18 | EBWK 5 Day MEC Holidays | 2006-07-29 |  | 0 | 0 |  |  | 03 | EM | U20 | 03U | PI | U | E | 1 | 1 | E2B2 |  | P03 |  |  |  |  |  |  |  |  | 5 | EK02UPICBC |  | FW |  |
| EM03UPIOSC |  | 03U Model Review Mtg (HOC/MEC) - Outfall Sewer | 5d | 2005-11-28 A | 2005-12-02 A | EK03UPIOSA, EM000U000 SS | 100% | 2005-11-14 | 2005-11-18 | EBWK 5 Day MEC Holidays | 2006-07-29 |  | 0 | 0 |  |  | 03 | EM | U20 | 03U | PI | U | E | 1 | 1 | E2B2 |  | P03 |  |  |  |  |  |  |  |  | 5 | EK02UPICBC |  | OS |  |
| EM03CPI123 |  | 03C Plant Layout Nozzle Release | 5d | 2005-12-19 A | 2005-12-23 A | EM03CPI120 SS+20d, PK000MD46P FF+20d | 100% |  |  | EBWK 5 Day MEC Holidays | 2006-07-29 | 123 | 0 | 0 | 03C | PI123 | 03 | EM | P20 | 03C | PI | P | E | 31 | 14 | E5B5 |  | P19 |  |  |  |  |  |  |  |  |  |  |  |  |  |
| EM03UPIASD |  | 03U Planning Release - Acid Sewer | 5d | 2005-12-19 A | 2006-01-23 A | EM03UPIASB | 100% | 2005-12-19 | 2005-12-23 | EBWK 5 Day MEC Holidays | 2006-07-29 |  | 0 | 0 |  |  | 03 | EM | U20 | 03U | PI | U | E | 1 | 1 | E2B2 |  | P07 |  |  | PS |  |  |  |  |  | 5 | EK02UPICBD |  | AS |  |
| EM03UPICSD |  | 03U Planning Release - Caustic Sewer | 5d | 2005-12-19 A | 2006-01-23 A | EM03UPICSB | 100% | 2005-12-19 | 2005-12-23 | EBWK 5 Day MEC Holidays | 2006-07-29 |  | 0 | 0 |  |  | 03 | EM | U20 | 03U | PI | U | E | 1 | 1 | E2B2 |  | P07 |  |  | PS |  |  |  |  |  | 5 | EK02UPICBD |  | CS |  |
| EM03UPIFWD |  | 03U Planning Release - Firewater | 5d | 2005-12-19 A | 2006-01-23 A | EM03UPIFWB | 100% | 2005-12-19 | 2005-12-23 | EBWK 5 Day MEC Holidays | 2006-07-29 |  | 0 | 0 |  |  | 03 | EM | U20 | 03U | PI | U | E | 1 | 1 | E2B2 |  | P07 |  |  | PS |  |  |  |  |  | 5 | EK02UPICBD |  | FW |  |
| EM03UPIOSD |  | 03U Planning Release - Outfall Sewer | 5d | 2005-12-19 A | 2006-01-23 A | EM03UPIOSB | 100% | 2005-12-19 | 2005-12-23 | EBWK 5 Day MEC Holidays | 2006-07-29 |  | 0 | 0 |  |  | 03 | EM | U20 | 03U | PI | U | E | 1 | 1 | E2B2 |  | P07 |  |  | PS |  |  |  |  |  | 5 | EK02UPICBD |  | OS |  |
| EM03DPI130 |  | 03D Model Review Mtg | 1d | 2006-02-16 A | 2006-02-16 A | EK020PI011, EM03DPI120 SS, EM03DPI123 FF | 100% | 2006-03-06 | 2006-03-06 | EBWK 5 Day MEC Holidays | 2006-07-29 | 130 | 0 | 0 | 03D | PI130 | 03 | EM | P20 | 03D | PI | P | E | 12 | 32 | E5B5 |  | P03 |  |  |  |  |  |  |  |  |  |  |  |  |  |
| EK030PI014 |  | Plot Plan - Utility Plant Issue IFC | 30d | 2006-02-27 A | 2006-04-28 A | EK030PI012 S1 | 100% | 2006-02-27 | 2006-04-07 |  | 2006-07-29 |  | 0 | 0 |  |  | 03 | EM | P10 | 030 | PI | P | E |  |  | E5B5 |  | P17 |  |  |  |  |  |  |  | 03A ML500 2003-L, 03E MU330 2001-U,2003-U 25-Jul | 30 |  |  |  | 17 |
| EM03API200 |  | 03A Equipment Location Plans | 38d | 2006-02-27 A | 2006-09-08 A | EK030PI012 S1, EM03API132 FF+5d | 100% | 2006-02-27 | 2006-04-24 | EBWK 5 Day MEC Holidays | 2006-07-29 | 132 | 0 | 0 | 02A | PI132 | 03 | EM | P20 | 03A | PI | P | E | 36 | 25 | E4B4 |  | P18 |  |  |  |  |  |  |  |  |  |  |  |  |  |
| EM03BPI200 |  | 03B Equipment Location Plans | 10d | 2006-02-27 A | 2006-09-06 A | EK030PI012 S1, EM03BPI132 FF+3d | 100% | 2006-02-27 | 2006-03-10 | EBWK 5 Day MEC Holidays | 2006-07-29 | 132 | 0 | 0 | 02A | PI132 | 03 | EM | P20 | 03B | PI | P | E | 36 | 25 | E4B4 |  | P18 |  |  |  |  |  |  |  |  |  |  |  |  |  |
| EM03CPI130 |  | 03C Model Review Mtg | 2d | 2006-02-27 A | 2006-02-28 A | EK020PI011, EM03CPI120, EM03CPI123 FF | 100% |  |  | EBWK 5 Day MEC Holidays | 2006-07-29 | 130 | 0 | 0 | 03C | PI130 | 03 | EM | P20 | 03C | PI | P | E | 31 | 14 | E5B5 |  | P03 |  |  |  |  |  |  |  |  |  |  |  |  |  |
| EM03CPI200 |  | 03C Equipment Location Plans | 24d | 2006-02-27 A | 2006-04-07 A | EK030PI012 S1 | 100% | 2006-02-27 | 2006-03-31 | EBWK 5 Day MEC Holidays | 2006-07-29 | 132 | 0 | 0 | 02A | PI132 | 03 | EM | P20 | 03C | PI | P | E | 36 | 25 | E4B4 |  | P18 |  |  |  |  |  |  |  |  |  |  |  |  |  |
| EM03DPI200 |  | 03D Equipment Location Plans | 19d | 2006-02-27 A | 2006-04-07 A | EK030PI012 S1 | 100% | 2006-02-27 | 2006-03-24 | EBWK 5 Day MEC Holidays | 2006-07-29 | 132 | 0 | 0 | 02A | PI132 | 03 | EM | P20 | 03D | PI | P | E | 36 | 25 | E4B4 |  | P18 |  |  |  |  |  |  |  |  |  |  |  |  |  |
| EM03EPI200 |  | 03E Equipment Location Plans | 57d | 2006-02-27 A | 2006-10-06 A | EK030PI012 S1, PK03EMUV01 FF+10d, EK03EPI030 FF, EM03EPI132 FF+3d | 100% | 2006-02-27 | 2006-05-22 | EBWK 5 Day MEC Holidays | 2006-07-29 | 132 | 0 | 0 | 02A | PI132 | 03 | EM | P20 | 03E | PI | P | E | 36 | 25 | E4B4 |  | P18 |  |  |  |  |  |  |  |  |  |  |  |  |  |
| EM03UPIFWE |  | 03U Detail Model Development - FW, Outfall/Acid/Caustic Sewer | 25d | 2006-02-27 A | 2006-03-10 A | EM03UPIFWD, EM03UPIOSD, EM03UPIASD, EM03UPICSD | 100% | 2006-02-27 | 2006-04-03 | EBWK 5 Day MEC Holidays | 2006-07-29 |  | 0 | 0 |  |  | 03 | EM | U20 | 03U | PI | U | E | 1 | 1 | E5B5 |  | P08 |  |  |  |  |  |  |  |  | 50 | EM02UPICBE |  | FW | 17 |
| EM03CPI140 |  | 03C Model Review Comment Resolution | 3d | 2006-03-13 A | 2006-03-30 A | EM03CPI130 | 100% | 2006-03-13 | 2006-03-15 | EBWK 5 Day MEC Holidays | 2006-07-29 | 130 | 0 | 0 | 03C | PI130 | 03 | EM | P20 | 03C | PI | P | E | 31 | 14 | E5B5 |  | P04 |  |  |  |  |  |  |  |  |  |  |  |  |  |
| EM03DPI021 |  | 03D Model Review Comment Resolution | 3d | 2006-03-13 A | 2006-03-15 A | EM03DPI130 | 100% |  |  |  | 2006-07-29 |  | 0 | 0 |  |  | 03 | EM | P50 | 03D | PI | P | E |  |  |  |  | P04 |  |  |  |  |  |  |  |  |  |  |  |  |  |
| EM03UPIASF |  | 03U IDP - Detail Design - Other HDPE (AS & NA) | 5d | 2006-03-13 A | 2006-05-12 A | EK030PI012 S1, EM03UPIFWE | 100% | 2006-03-13 | 2006-03-17 | EBWK 5 Day MEC Holidays | 2006-07-29 |  | 0 | 0 |  |  | 03 | EM | U20 | 03U | PI | U | E | 1 | 1 | E5B5 |  | P11 |  |  |  |  |  |  |  |  | 50 | EM02UPICBF |  | AS | 17 |
| EM03UPIFWF |  | 03U IDP - Detail Design - HDPE Piping (FW) | 5d | 2006-03-13 A | 2006-03-17 A | EM03UPIFWE, EK030PI012 S1 | 100% |  |  | EBWK 5 Day MEC Holidays | 2006-07-29 |  | 0 | 0 |  |  | 03 | EM | U20 | 03U | PI | U | E | 1 | 1 | E5B5 |  | P11 |  |  |  |  |  |  |  |  | 50 | EM02UPICBF |  | FW | 17 |
| EM03UPIOSF |  | 03U IDP - Detail Design - Metalic Piping (OS) | 5d | 2006-03-13 A | 2006-05-05 A | EK030PI012 S1, EM03UPIFWE | 100% | 2006-03-13 | 2006-03-17 | EBWK 5 Day MEC Holidays | 2006-07-29 |  | 0 | 0 |  |  | 03 | EM | U20 | 03U | PI | U | E | 1 | 1 | E5B5 |  | P11 |  |  |  |  |  |  |  |  | 50 | EM02UPICBF |  | OS | 17 |
| EM03DPI133 |  | 03D IDP - Plant Layout | 2d | 2006-03-16 A | 2006-03-17 A | EM03DPI130, EM03DPI021 | 100% |  |  | EBWK 5 Day MEC Holidays | 2006-07-29 | 132 | 0 | 0 | 01A | PI132 | 03 | EM | P20 | 03D | PI | P | E | 12 | 32 | E5B5 |  | P05 |  |  |  |  |  |  |  |  |  |  |  |  |  |
| EM03BPI120 |  | 03B Plant Layout Model | 30d | 2006-03-22 A | 2006-03-23 A | EK020SY145 FF+10d, EM03BEL120 FF, EK03BPI030, EK03BSY170 FF+10d, PK03BMJ154 FF+9d, EK030SY050, EM000PI025 FF, PK03BMU100 FF, EK030IC210 FF, EK030I1100 FF | 100% | 2006-05-02 | 2006-06-12 | EBWK 5 Day MEC Holidays | 2006-07-29 | 120 | 0 | 0 | 03B | PI120 | 03 | EM | P20 | 03B | PI | P | E | 20 | 23 | E5B5 |  | P02 |  |  |  |  |  |  |  |  |  |  |  |  |  |
| EM03FPI120 |  | 03F Plant Layout Model | 19d | 2006-03-24 A | 2006-04-12 A | EM03FEL120 FF, EK03FPI030, EM000PI025 FF, PK000MU41N FF+10d, PK000MU31J FF+10d | 100% | 2006-03-24 | 2006-04-21 | EBWK 5 Day MEC Holidays | 2006-07-29 | 120 | 0 | 0 | EM200 | PI120 | 03 | EM | P20 | 03F | PI | P | E | 26 | 38 | E5B5 |  | P02 |  |  |  |  |  |  |  |  |  |  |  |  |  |
| EM03DPI132 |  | 03D Planning Release | 1d | 2006-03-27 A | 2006-03-27 A | EM03DCV160 FF, EM03DPI130, EM03DPI133, EK03DPI050 | 100% |  |  | EBWK 5 Day MEC Holidays | 2006-07-29 | 132 | 0 | 0 | 03D | PI132 | 03 | EM | P20 | 03D | PI | P | E | 12 | 32 | E5B5 |  | P07 |  |  | PS |  |  |  |  |  |  |  |  |  |  |
| EM03UPIFWG |  | 03U Iso Issue IFC - HDPE Piping (FW) | 5d | 2006-03-27 A | 2006-03-31 A | EM03UPIFWF | 100% |  |  | EBWK 5 Day MEC Holidays | 2006-07-29 |  | 0 | 0 |  |  | 03 | EM | U40 | 03U | PI | U | E | 1 | 1 | E5B5 |  | P13 |  |  | PS |  |  |  |  |  | 50 | EM02UPICBG |  | FW | 17 |
| EM03CPI133 |  | 03C IDP - Plant Layout | 2d | 2006-03-31 A | 2006-04-03 A | EM03CPI140 | 100% |  |  | EBWK 5 Day MEC Holidays | 2006-07-29 | 132 | 0 | 0 | 01A | PI132 | 03 | EM | P20 | 03C | PI | P | E | 31 | 14 | E5B5 |  | P05 |  |  |  |  |  |  |  |  |  |  |  |  |  |
| EM03FPI123 |  | 03F Plant Layout Nozzle Release | 5d | 2006-04-10 A | 2006-04-17 A | EM03FPI120 SS+10d, PK000MD46P FF+10d | 100% | 2006-04-10 | 2006-04-18 | EBWK 5 Day MEC Holidays | 2006-07-29 | 123 | 0 | 0 | EM200 | PI123 | 03 | EM | P20 | 03F | PI | P | E | 26 | 38 | E5B5 |  | P19 |  |  |  |  |  |  |  |  |  |  |  |  |  |
| EM03CPI132 |  | 03C Planning Release | 1d | 2006-04-11 A | 2006-04-11 A | EM03CCV160 FF, EM03CPI130, EK03CPI050 FF, EM03CPI133 FS+5d | 100% |  |  | EBWK 5 Day MEC Holidays | 2006-07-29 | 132 | 0 | 0 | 03C | PI132 | 03 | EM | P20 | 03C | PI | P | E | 31 | 14 | E5B5 |  | P07 |  |  | PS |  |  |  |  |  |  |  |  |  |  |
| EM03CPI134 |  | 03C Detail Model Development | 30d | 2006-04-12 A | 2006-05-18 A | EM03CPI132, PK03CMJ154 FF+10d, EM03CPI133, PK03CMD06 FF+10d, PK03CMD07 FF+10d, PM000MD46N FF+10d, PK000MJ36J FF+10d, PK000MJ36N FF+10d, EK03CIC300 FF+3d, PK03CMJV01 FF+10d | 100% | 2006-04-12 | 2006-05-26 | EBWK 5 Day MEC Holidays | 2006-07-29 | 134 | 0 | 0 | 03C | PI134 | 03 | EM | P50 | 03C | PI | P | E | 31 | 14 | E5B5 |  | P08 |  |  |  |  |  |  |  |  |  |  |  |  |  |
| EM03CPI138 |  | 03C Design / Issue Pipe Supports IFC | 45d | 2006-04-20 A | 2006-08-31 A | EK000PI051 FF, EM03CPI132, EM03CPI134 SS, EM03CPI135 FF | 100% | 2006-04-20 | 2006-06-22 | EBWK 5 Day MEC Holidays | 2006-07-29 | 138 | 0 | 0 | 03C | PI138 | 03 | EM | P60 | 03C | PI | P | E | 31 | 14 | E5B5 |  | P14 |  |  | PS |  |  |  |  | 100% Complete as of Aug. 31th. August Milestone. | 50 |  |  |  |  |
| EM03BPI123 |  | 03B Plant Layout Nozzle Release | 5d | 2006-05-16 A | 2006-05-22 A | EM03BPI120 SS+10d | 100% |  |  | EBWK 5 Day MEC Holidays | 2006-07-29 | 123 | 0 | 0 | 03B | PI123 | 03 | EM | P20 | 03B | PI | P | E | 20 | 23 | E5B5 |  | P19 |  |  |  |  |  |  |  |  |  |  |  |  |  |
| EM03UPI190 |  | 03U U/G Plan Dwgs Issue IFC | 5d | 2006-05-22 A | 2006-05-30 A | EM03UPIFWF, EM03UPIOSF, EM03UPIASF | 100% | 2006-05-22 | 2006-05-26 | EBWK 5 Day MEC Holidays | 2006-07-29 |  | 0 | 0 |  |  | 03 | EM | U40 | 03U | PI | U | E | 3 | 3 | E5B5 |  | P13 |  |  |  |  |  |  |  |  | 40 |  |  | 03U | 17 |
| EM03UPIASG |  | 03U Iso Issue IFC - Other HDPE (AS & NA) | 5d | 2006-05-22 A | 2006-06-13 A | EM03UPIASF | 100% | 2006-05-22 | 2006-05-26 | EBWK 5 Day MEC Holidays | 2006-07-29 |  | 0 | 0 |  |  | 03 | EM | U40 | 03U | PI | U | E | 1 | 1 | E5B5 |  | P13 |  |  | PS |  |  |  |  |  | 50 | EM02UPICBG |  | AS | 17 |
| EM03UPIOSG |  | 03U Iso Issue IFC - Metalic Piping (OS) | 5d | 2006-05-22 A | 2006-06-05 A | EM03UPIOSF | 100% | 2006-05-22 | 2006-05-26 | EBWK 5 Day MEC Holidays | 2006-07-29 |  | 0 | 0 |  |  | 03 | EM | U40 | 03U | PI | U | E | 1 | 1 | E5B5 |  | P13 |  |  | PS |  |  |  |  |  | 50 | EM02UPICBG |  | OS | 17 |
| EM03CPI141 |  | 03C Detail OP's & Services Model Review Mtg | 2d | 2006-05-24 A | 2006-05-25 A | EM03CPI134, EM03CSY172 | 100% |  |  | EBWK 5 Day MEC Holidays | 2006-07-29 | 130 | 0 | 0 | 03C | PI130 | 03 | EM | P20 | 03C | PI | P | E | 31 | 14 | E5B5 |  | P09 |  |  |  |  |  |  |  |  |  |  |  |  |  |
| EM03CPI142 |  | 03C OP's & Serv. Model Review Comment Resolution | 2d | 2006-05-26 A | 2006-06-13 A | EM03CPI141 | 100% | 2006-05-26 | 2006-05-29 | EBWK 5 Day MEC Holidays | 2006-07-29 | 130 | 0 | 0 | 03C | PI130 | 03 | EM | P20 | 03C | PI | P | E | 31 | 14 | E5B5 |  | P10 |  |  |  |  |  |  |  |  |  |  |  |  |  |

| ID | Activity | Duration | Start | Finish | Predecessors | Complete | Remaining | Planned start | Planned finish | Total float | Free float | Constraint | Expected finish | Calendar | zData Date | Sequence | PCA Criticality Index | PCA Duration Sensitivity | User Defined Field 1 | User Definer Field 2 | EB02 - UNIT | EB01 - RESP | EB06 - WORK OP | EB03 - AREA | EB05 - DISCIPLINE | EB10 - KEY | EB04 - CLASS | EB00 - EPC | EB15 - Civil / U/G Path of Construction | EB16 - Piping Path of Construction | EB17 - Suffix | Optimistic Duration | Most Likely Duration | Pessimistic Duration | user_text1 | user_integer2 | EB11 - FLAG | EB14 - RISK | EB21 - Rev 2 Risk Associations |
| --- | --- | --- | --- | --- | --- | --- | --- | --- | --- | --- | --- | --- | --- | --- | --- | --- | --- | --- | --- | --- | --- | --- | --- | --- | --- | --- | --- | --- | --- | --- | --- | --- | --- | --- | --- | --- | --- | --- | --- |
| EM03DPI134 | 03D Detail Model Development | 30d | 2006-05-30 A | 2006-07-14 A | EM03DPI132, PK03DMJ154 FF+10d, PK03DMF01 FF+10d, PK000MJ36J FF+10d, PK000MJ36N FF+10d, EK03DIC300 FF+3d, PK03DMJV01 FF+10d | 100% |  | 2006-06-05 | 2006-07-14 |  |  |  |  | EBWK 5 Day MEC Holidays | 2006-07-29 | 134 | 0 | 0 | 03D | PI134 | 03 | EM | P50 | 03D | PI | P08 | P | E | 12 | 32 | E5B5 |  |  |  |  |  |  |  |  |
| EM03API130 | 03A Model Review Mtg | 1d | 2006-05-30 A | 2006-05-30 A | EK020PI011, EM03API120, EM03API123 FF | 100% |  |  |  |  |  |  |  | EBWK 5 Day MEC Holidays | 2006-07-29 | 130 | 0 | 0 | 03A | PI130 | 03 | EM | P20 | 03A | PI | P03 | P | E | 25 | 13 | E5B5 |  |  |  |  |  |  |  |  |
| EM03API140 | 03A Model Review Comment Resolution | 5d | 2006-05-31 A | 2006-06-08 A | EM03API130 | 100% |  | 2006-05-31 | 2006-06-06 |  |  |  |  | EBWK 5 Day MEC Holidays | 2006-07-29 | 130 | 0 | 0 | 03A | PI130 | 03 | EM | P20 | 03A | PI | P04 | P | E | 25 | 13 | E5B5 |  |  |  |  |  |  |  |  |
| EM03BPI130 | 03B Model Review Mtg | 1d | 2006-06-01 A | 2006-06-01 A | EK020PI011, EM03BPI120 | 100% |  | 2006-06-12 | 2006-06-12 |  |  |  |  | EBWK 5 Day MEC Holidays | 2006-07-29 | 130 | 0 | 0 | 03B | PI130 | 03 | EM | P20 | 03B | PI | P03 | P | E | 20 | 23 | E5B5 |  |  |  |  |  |  |  |  |
| EM03API133 | 03A IDP - Plant Layout | 3d | 2006-06-02 A | 2006-06-02 A | EM03API140 | 100% |  | 2006-06-12 | 2006-06-14 |  |  |  |  | EBWK 5 Day MEC Holidays | 2006-07-29 | 132 | 0 | 0 | 01A | PI132 | 03 | EM | P20 | 03A | PI | P05 | P | E | 25 | 13 | E5B5 |  |  |  |  |  |  |  |  |
| EM03BPI140 | 03B Model Review Comment Resolution | 3d | 2006-06-02 A | 2006-06-06 A | EM03BPI130 | 100% |  | 2006-06-13 | 2006-06-15 |  |  |  |  | EBWK 5 Day MEC Holidays | 2006-07-29 | 130 | 0 | 0 | 03B | PI130 | 03 | EM | P20 | 03B | PI | P04 | P | E | 20 | 23 | E5B5 |  |  |  |  |  |  |  |  |
| EM03BPI133 | 03B IDP - Plant Layout | 2d | 2006-06-07 A | 2006-06-09 A | EM03BPI140 | 100% |  | 2006-06-16 | 2006-06-19 |  |  |  |  | EBWK 5 Day MEC Holidays | 2006-07-29 | 132 | 0 | 0 | 01A | PI132 | 03 | EM | P20 | 03B | PI | P05 | P | E | 20 | 23 | E5B5 |  |  |  |  |  |  |  |  |
| EM03YPI130 | 03Y Model Review Mtg | 2d | 2006-06-09 A | 2006-06-13 A | EM03YPI120 | 100% |  | 2006-06-09 | 2006-06-12 |  |  |  |  | EBWK 5 Day MEC Holidays | 2006-07-29 | 130 | 0 | 0 | 03Y | PI130 | 03 | EM | P20 | 03Y | PI | P03 | P | E | 13 | 12 | E5B5 | 1 | 2 | 3 |  |  |  |  |  |
| EM03CPI136 | 03C IDP - Detail Design | 5d | 2006-06-12 A | 2006-06-14 A | EM03CPI134, EM03CPI142 | 100% |  | 2006-06-12 | 2006-06-16 |  |  |  |  | EBWK 5 Day MEC Holidays | 2006-07-29 | 132 | 0 | 0 | 01A | PI132 | 03 | EM | P50 | 03C | PI | P11 | P | E | 31 | 14 | E5B5 |  |  |  |  |  |  |  |  |
| EM03FPI130 | 03F Model Review Mtg | 1d | 2006-06-14 A | 2006-06-14 A | EK020PI011, EM03FPI120, EM03FPI123 FF | 100% |  | 2006-06-23 | 2006-06-23 |  |  |  |  | EBWK 5 Day MEC Holidays | 2006-07-29 | 130 | 0 | 0 | EM200 | PI130 | 03 | EM | P20 | 03F | PI | P03 | P | E | 26 | 38 | E5B5 |  |  |  |  |  |  |  |  |
| EM03FPI141 | 03F Model Review Comment Resolution | 3d | 2006-06-15 A | 2006-07-20 A | EM03FPI130 | 100% |  | 2006-06-12 | 2006-06-14 |  |  |  |  | EBWK 5 Day MEC Holidays | 2006-07-29 | 130 | 0 | 0 | EM200 | PI130 | 03 | EM | P20 | 03F | PI | P04 | P | E | 26 | 38 | E5B5 |  |  |  | Manpwr. Issues. |  |  |  |  |
| EM03CPI135 | 03C A/G Piping Iso's - Issue IFC | 11d | 2006-06-22 A | 2006-08-31 A | EM03CPI134 SS+20d, EM03CPI134 FF, EM03CPI136, EM03CMD229 FF, EK03CPI143 FF | 100% |  | 2006-06-26 | 2006-07-10 |  |  |  |  | EBWK 5 Day MEC Holidays | 2006-07-29 | 135 | 0 | 0 | 03C | PI135 | 03 | EM | P50 | 03C | PI | P13 | P | E | 31 | 14 | E5B5 |  |  |  | 100% Complete as of Aug. 31th. August Milestone. | 5 | PS |  |  |
| EM03EPI123 | 03E Plant Layout Nozzle Release | 5d | 2006-06-23 A | 2006-06-29 A | EM03EPI120 FF+2d | 100% |  | 2006-07-03 | 2006-07-07 |  |  |  |  | EBWK 5 Day MEC Holidays | 2006-07-29 | 123 | 0 | 0 | 03E | PI123 | 03 | EM | P20 | 03E | PI | P19 | P | E | 35 | 33 | E5B5 |  |  |  | Possible non-activity per Tim, confirm w/MEC. |  |  |  |  |
| EM05API140 | 05A Model Review Comment Resolution | 5d | 2006-06-26 A | 2006-08-21 A | EM05API130 | 100% |  | 2006-06-26 | 2006-06-30 |  |  |  |  | EBWK 5 Day MEC Holidays | 2006-07-29 |  | 0 | 0 |  |  | 03 | EM | P50 | 05A | PI | P04 | P | E |  |  |  |  |  |  |  |  |  |  |  |
| EM03EPI130 | 03E Model Review Mtg | 4d | 2006-06-29 A | 2006-06-29 A | EK020PI011, EM03EPI120, EM03EPI123 FF | 100% |  | 2006-06-28 | 2006-07-03 |  |  |  |  | EBWK 5 Day MEC Holidays | 2006-07-29 | 130 | 6.2 | 0 | 03E | PI130 | 03 | EM | P20 | 03E | PI | P03 | P | E | 35 | 33 | E5B5 | 3 | 4 | 5 |  |  |  |  |  |
| EM03EPI141 | 03E Model Review Comment Resolution | 3d | 2006-07-03 A | 2006-07-14 A | EM03EPI130 | 100% |  | 2006-07-03 | 2006-07-05 |  |  |  |  | EBWK 5 Day MEC Holidays | 2006-07-29 | 130 | 6.2 | 0 | 03E | PI130 | 03 | EM | P20 | 03E | PI | P04 | P | E | 35 | 33 | E5B5 | 2 | 3 | 4 |  |  |  |  |  |
| EM03FPI200 | 03F Equipment Location Plans | 5d | 2006-07-17 A | 2006-07-25 A | EK030PI012 S1, EM03FPI132 FF | 100% |  | 2006-07-31 | 2006-08-04 |  |  |  |  | EBWK 5 Day MEC Holidays | 2006-07-29 | 132 | 0 | 0 | 02A | PI132 | 03 | EM | P20 | 03F | PI | P18 | P | E | 36 | 25 | E4B4 |  |  |  |  |  |  |  |  |
| EM03BPI132 | 03B Planning Release | 5d | 2006-07-17 A | 2006-09-08 A | EM03BPI130, EK03BPI050 FF, EM03BPI133, EM03BPI120 SS+61d | 100% |  | 2006-07-17 | 2006-07-21 |  |  |  |  | EBWK 5 Day MEC Holidays | 2006-07-29 | 132 | 0 | 0 | 03B | PI132 | 03 | EM | P20 | 03B | PI | P07 | P | E | 20 | 23 | E5B5 |  |  |  |  |  | PS |  |  |
| EM03EPI133 | 03E IDP - Plant Layout | 2d | 2006-07-17 A | 2006-07-21 A | EM03EPI141 | 100% |  | 2006-07-17 | 2006-07-18 |  |  |  |  | EBWK 5 Day MEC Holidays | 2006-07-29 | 132 | 6.2 | 0.8 | 01A | PI132 | 03 | EM | P20 | 03E | PI | P05 | P | E | 35 | 33 | E5B5 | 1 | 2 | 3 |  |  |  |  |  |
| EM03YPI133 | 03Y IDP - Plant Layout | 12d | 2006-07-17 A | 2006-07-21 A | EM03YPI021 | 100% |  | 2006-07-17 | 2006-08-01 |  |  |  |  | EBWK 5 Day MEC Holidays | 2006-07-29 | 132 | 0 | 1.6 | 01A | PI132 | 03 | EM | P20 | 03Y | PI | P05 | P | E | 13 | 12 | E5B5 | 11 | 12 | 15 |  |  |  |  |  |
| EM03FPI142 | 03F Detail OP's & Service Model Review Mtg | 2d | 2006-07-18 A | 2006-07-19 A | EM03FPI134 | 100% |  | 2006-08-21 | 2006-08-22 |  |  |  |  | EBWK 5 Day MEC Holidays | 2006-07-29 | 130 | 0 | 0 | EM200 | PI130 | 03 | EM | P20 | 03F | PI | P09 | P | E | 26 | 38 | E5B5 |  |  |  |  |  |  |  |  |
| EM03DPI141 | 03D Detail OP's & Services Model Review Mtg | 1d | 2006-07-19 A | 2006-07-20 A | EM03DPI134, EM03DSY172 | 100% |  | 2006-07-19 | 2006-07-19 |  |  |  |  | EBWK 5 Day MEC Holidays | 2006-07-29 | 134 | 0 | 0 | 01A | PI134 | 03 | EM | P20 | 03D | PI | P09 | P | E | 30 | 27 | E5B5 |  |  |  |  |  |  |  |  |
| EM03DPI143 | 03D OP's & Serv. Model Review Comments Resolution | 5d | 2006-07-21 A | 2006-08-17 A | EM03DPI141 | 100% |  | 2006-07-24 | 2006-07-28 |  |  |  |  | EBWK 5 Day MEC Holidays | 2006-07-29 | 134 | 0 | 0 | 01A | PI134 | 03 | EM | P20 | 03D | PI | P10 | P | E | 30 | 27 | E5B5 |  |  |  |  |  |  |  |  |
| EM03FPI133 | 03F IDP - Plant Layout | 2d | 2006-07-24 A | 2006-07-28 A | EM03FPI141 | 100% |  | 2006-07-24 | 2006-07-25 |  |  |  |  | EBWK 5 Day MEC Holidays | 2006-07-29 | 132 | 0 | 0 | 01A | PI132 | 03 | EM | P20 | 03F | PI | P05 | P | E | 26 | 38 | E5B5 |  |  |  |  |  |  |  |  |
| EM03YPI132 | 03Y Planning Release | 1d | 2006-07-28 A | 2006-08-04 A | EK03YPI050 | 100% |  | 2006-07-24 | 2006-07-24 |  |  |  |  | EBWK 5 Day MEC Holidays | 2006-07-29 | 132 | 0 | 0 | 03Y | PI132 | 03 | EM | P20 | 03Y | PI | P07 | P | E | 13 | 12 | E5B5 |  |  |  |  |  | PS |  |  |
| EM03API132 | 03A Planning Release | 2d | 2006-08-04 A | 2006-08-07 A | EM03ACV160 SS, EM03API130, EK03API050 FF, EM03API133 | 100% |  | 2006-08-24 | 2006-08-25 |  |  |  |  | EBWK 5 Day MEC Holidays | 2006-07-29 | 132 | 0 | 0 | 03A | PI132 | 03 | EM | P20 | 03A | PI | P07 | P | E | 25 | 13 | E5B5 |  |  |  |  |  | PS |  |  |
| EM03FPI132 | 03F Planning Release | 1d | 2006-08-04 A | 2006-08-04 A | EM03FCV160 FF, EK03FPI050 | 100% |  | 2006-08-09 | 2006-08-09 |  |  |  |  | EBWK 5 Day MEC Holidays | 2006-07-29 | 132 | 0 | 0 | EM200 | PI132 | 03 | EM | P20 | 03F | PI | P07 | P | E | 26 | 38 | E5B5 |  |  |  |  |  | PS |  |  |
| EM03FPI134 | 03F Detail Model Development | 40d | 2006-08-07 A | 2006-08-17 A | EM03FPI132, PK03FMD03 FF+10d, PM000MD46N FF+10d, PK000MU41N FF+10d, EK03FIC300 FF, PK03FMUV01 FF+10d, PK03FMUV04 FF+10d, PK03FMUV07 FF+10d | 100% |  | 2006-08-10 | 2006-10-04 |  |  |  |  | EBWK 5 Day MEC Holidays | 2006-07-29 | 134 | 0 | 0 | EM200 | PI134 | 03 | EM | P50 | 03F | PI | P08 | P | E | 26 | 38 | E5B5 |  |  |  |  |  |  |  |  |
| EM03YPI134 | 03Y Detail Model Development | 30d | 2006-08-10 A | 2006-08-29 A | EM03YPI132, EK03YIC300 FF+3d | 100% |  | 2006-08-10 | 2006-09-20 |  |  |  |  | EBWK 5 Day MEC Holidays | 2006-07-29 | 134 | 0 | 0 | 03Y | PI134 | 03 | EM | P50 | 03Y | PI | P08 | P | E | 13 | 12 | E5B5 |  |  |  |  |  |  |  |  |
| EM03BPI134 | 03B Detail Model Development | 30d | 2006-08-14 A | 2006-09-11 A | EM03BPI132 SS, PK03BMJ154 FF+10d, EM03BPI133, PK000MJ36J FF+10d, PK000MJ36N FF+10d, EK03BIC300 FF+3d, PK03BMUV01 FF+10d, PK03BMUV04 FF+10d | 100% |  | 2006-08-17 | 2006-09-27 |  |  |  |  | EBWK 5 Day MEC Holidays | 2006-07-29 | 134 | 0 | 0 | 03B | PI134 | 03 | EM | P50 | 03B | PI | P08 | P | E | 20 | 23 | E5B5 |  |  |  |  |  |  |  |  |
| EM03API134 | 03A Detail Model Development | 20d | 2006-08-14 A | 2006-09-08 A | EM03API132, EM03API133, EK030IC210 FF+5d, EK03AIC300 FF+3d, PK03AMLV01 FF+10d | 100% |  |  |  |  |  |  |  | EBWK 5 Day MEC Holidays | 2006-07-29 | 134 | 0 | 0 | 03A | PI134 | 03 | EM | P50 | 03A | PI | P08 | P | E | 25 | 13 | E5B5 |  |  |  |  |  |  |  |  |
| EM03FPI143 | 03F OP's & Serv. Model Review Comment Resolution | 4d | 2006-08-15 A | 2006-08-21 A | EM03FPI142 | 100% |  | 2006-08-23 | 2006-08-28 |  |  |  |  | EBWK 5 Day MEC Holidays | 2006-07-29 | 130 | 0 | 0 | EM200 | PI130 | 03 | EM | P20 | 03F | PI | P10 | P | E | 26 | 38 | E5B5 |  |  |  |  |  |  |  |  |
| EM03DPI136 | 03D IDP - Detail Design | 2d | 2006-08-18 A | 2006-08-18 A | EM03DPI143 | 100% |  | 2006-08-22 | 2006-08-23 |  |  |  |  | EBWK 5 Day MEC Holidays | 2006-07-29 | 132 | 0 | 0 | 01A | PI132 | 03 | EM | P50 | 03D | PI | P11 | P | E | 12 | 32 | E5B5 |  |  |  |  |  |  |  |  |
| EM03EPI134 | 03E Detail Model Development | 30d | 2006-08-21 A | 2006-10-10 A | EM03EPI132, EK03EIC300 FF+3d, PK03EMUV01 FF+10d | 100% |  | 2006-08-21 | 2006-09-29 |  |  |  |  | EBWK 5 Day MEC Holidays | 2006-07-29 | 134 | 6.6 | 0 | 03E | PI134 | 03 | EM | P50 | 03E | PI | P08 | P | E | 35 | 33 | E5B5 | 40 | 40 | 50 |  |  |  |  |  |
| EM03FPI136 | 03F IDP - Detail Design | 5d | 2006-08-22 A | 2006-09-25 A | EM03FPI143 | 100% |  | 2006-08-29 | 2006-09-04 |  |  |  |  | EBWK 5 Day MEC Holidays | 2006-07-29 | 132 | 0 | 0 | 01A | PI132 | 03 | EM | P50 | 03F | PI | P11 | P | E | 26 | 38 | E5B5 |  |  |  |  |  |  |  |  |
| EM03EPI132 | 03E Planning Release | 1d | 2006-08-23 A | 2006-08-23 A | EK03EPI050 SS | 100% |  | 2006-08-29 | 2006-08-29 |  |  |  |  | EBWK 5 Day MEC Holidays | 2006-07-29 | 132 | 6.6 | 0 | 03E | PI132 | 03 | EM | P20 | 03E | PI | P07 | P | E | 35 | 33 | E5B5 |  |  |  |  |  | PS |  |  |
| EM03YPI141 | 03Y Detail OP's & Services Model Review Mtg | 5d | 2006-08-24 A | 2006-08-30 A | EM03YPI134, EM03YSY172 | 100% |  | 2006-09-01 | 2006-09-07 |  |  |  |  | EBWK 5 Day MEC Holidays | 2006-07-29 | 134 | 0 | 0 | 01A | PI134 | 03 | EM | P20 | 03Y | PI | P09 | P | E | 30 | 27 | E5B5 |  |  |  |  |  |  |  |  |
| EM03DPI135 | 03D A/G Piping Iso's - Issue IFC | 15d | 2006-08-28 A | 2006-10-27 A | EK03DPI145 SS | 100% |  | 2006-09-05 | 2006-09-25 |  |  |  |  | EBWK 5 Day MEC Holidays | 2006-07-29 | 135 | 0 | 0 | 03D | PI135 | 03 | EM | P50 | 03D | PI | P13 | P | E | 12 | 32 | E5B5 |  |  |  | 100% Complete as of Oct. 26th. | 5 | PS |  |  |
| EM03BPI141 | 03B Detail OP's & Services Model Review Mtg | 2d | 2006-08-30 A | 2006-08-30 A | EM03BPI134, EM03BSY172 | 100% |  | 2006-08-30 | 2006-08-31 |  |  |  |  | EBWK 5 Day MEC Holidays | 2006-07-29 | 130 | 0 | 0 | 03B | PI130 | 03 | EM | P20 | 03B | PI | P09 | P | E | 20 | 23 | E5B5 |  |  |  |  |  |  |  |  |
| EM03BPI136 | 03B IDP - Detail Design | 5d | 2006-09-01 A | 2006-09-07 A | EM03BPI134, EM03BPI142 | 100% |  |  |  |  |  |  |  | EBWK 5 Day MEC Holidays | 2006-07-29 | 132 | 0 | 0 | 01A | PI132 | 03 | EM | P50 | 03B | PI | P11 | P | E | 20 | 23 | E5B5 |  |  |  |  |  |  |  |  |
| EM03FPI135 | 03F A/G Piping Iso's - Issue IFC | 15d | 2006-09-04 A | 2006-12-22 A | EK03FPI144 SS, EM03FMD229 FF | 100% |  | 2006-09-11 | 2006-09-29 |  |  |  |  | EBWK 5 Day MEC Holidays | 2006-07-29 | 135 | 0 | 0 | EM200 | PI135 | 03 | EM | P50 | 03F | PI | P13 | P | E | 26 | 38 | E5B5 |  |  |  | 100% Complete as of Dec 30th. | 5 | PS |  |  |
| EM03FPI138 | 03F Design / Issue Pipe Supports IFC | 67d | 2006-09-04 A | 2006-12-22 A | EK000PI051 FF, EM03FPI132, EM03FPI135 FF, EM03FPI134 SS | 100% |  | 2006-09-11 | 2006-12-15 |  |  |  |  | EBWK 5 Day MEC Holidays | 2006-07-29 | 138 | 0 | 0 | EM200 | PI138 | 03 | EM | P60 | 03F | PI | P14 | P | E | 26 | 38 | E5B5 |  |  |  | 100% Complete as of Dec 30th. | 60 | PS | 17 |  |
| EM03YPI135 | 03Y A/G Piping Iso's - Issue IFC | 15d | 2006-09-04 A | 2006-10-20 A | EK03YPI144 SS | 100% |  | 2006-09-15 | 2006-10-05 |  |  |  |  | EBWK 5 Day MEC Holidays | 2006-07-29 | 135 | 0 | 0 | 03Y | PI135 | 03 | EM | P50 | 03Y | PI | P13 | P | E | 13 | 12 | E5B5 |  |  |  | 100% Complete as of Oct. 19th. | 5 | PS |  |  |
| EM03YPI138 | 03Y Design / Issue Pipe Supports IFC | 45d | 2006-09-04 A | 2006-10-20 A | EK000PI051 FF, EM03YPI135 FF | 100% |  | 2006-09-15 | 2006-11-17 |  |  |  |  | EBWK 5 Day MEC Holidays | 2006-07-29 | 138 | 0 | 0 | 03Y | PI138 | 03 | EM | P60 | 03Y | PI | P14 | P | E | 13 | 12 | E5B5 |  |  |  | 100% Complete as of Oct. 19th. | 60 | PS |  |  |
| EM03BPI142 | 03B OP's & Serv. Model Review Comment Resolution | 2d | 2006-09-04 A | 2006-09-06 A | EM03BPI141 | 100% |  | 2006-09-04 | 2006-09-05 |  |  |  |  | EBWK 5 Day MEC Holidays | 2006-07-29 | 130 | 0 | 0 | 03B | PI130 | 03 | EM | P20 | 03B | PI | P10 | P | E | 20 | 23 | E5B5 |  |  |  |  |  |  |  |  |
| EM03YPI143 | 03Y OP's & Serv. Model Review Comments Resolution | 5d | 2006-09-04 A | 2006-09-11 A | EM03YPI141 | 100% |  | 2006-09-04 | 2006-09-08 |  |  |  |  | EBWK 5 Day MEC Holidays | 2006-07-29 | 134 | 0 | 0 | 01A | PI134 | 03 | EM | P20 | 03Y | PI | P10 | P | E | 30 | 27 | E5B5 |  |  |  |  |  |  |  |  |
| EM03DPI138 | 03D Design / Issue Pipe Supports IFC | 45d | 2006-09-05 A | 2006-10-27 A | EK000PI051 FF, EM03DPI132, EM03DPI130, EM03DPI135 FF, EM03DPI134 SS | 100% |  | 2006-09-05 | 2006-11-07 |  |  |  |  | EBWK 5 Day MEC Holidays | 2006-07-29 | 138 | 0 | 0 | 03D | PI138 | 03 | EM | P60 | 03D | PI | P14 | P | E | 12 | 32 | E5B5 |  |  |  | 100% Complete as of Oct. 26th. | 50 | PS |  |  |
| EM03API141 | 03A Detail OP's & Services Model Review Mtg | 2d | 2006-09-11 A | 2006-09-13 A | EM03API134, EM03ASY172 | 100% |  | 2006-09-04 | 2006-09-05 |  |  |  |  | EBWK 5 Day MEC Holidays | 2006-07-29 | 130 | 0 | 0 | 03A | PI130 | 03 | EM | P20 | 03A | PI | P09 | P | E | 25 | 13 | E5B5 |  |  |  |  |  |  |  |  |
| EM03API135 | 03A A/G Piping Iso's - Issue IFC | 15d | 2006-09-11 A | 2006-12-18 A | EM03API134 SS+10d, EM03API134 FF, EM03API136 FS+5d, EK03API143 | 100% |  | 2006-09-11 | 2006-09-29 |  |  | start on or after 2006-09-29 |  | EBWK 5 Day MEC Holidays | 2006-07-29 | 135 | 0 | 0 | 03A | PI135 | 03 | EM | P50 | 03A | PI | P13 | P | E | 25 | 13 | E5B5 |  |  |  | 100% Complete as of Dec 14th. | 5 | PS |  |  |
| EM03API136 | 03A IDP - Detail Design | 4d | 2006-09-11 A | 2006-09-12 A | EM03API134, EM03API142 | 100% |  | 2006-09-11 | 2006-09-14 |  |  |  |  | EBWK 5 Day MEC Holidays | 2006-07-29 | 132 | 0 | 0 | 01A | PI132 | 03 | EM | P50 | 03A | PI | P11 | P | E | 25 | 13 | E5B5 |  |  |  |  |  |  |  |  |
| EM03API138 | 03A Design / Issue Pipe Supports IFC | 45d | 2006-09-11 A | 2006-12-18 A | EK000PI051 FF, EM03API132, EM03API134 SS, EM03API135 FF | 100% |  | 2006-09-11 | 2006-11-13 |  |  |  |  | EBWK 5 Day MEC Holidays | 2006-07-29 | 138 | 0 | 0 | 03A | PI138 | 03 | EM | P60 | 03A | PI | P14 | P | E | 25 | 13 | E5B5 |  |  |  | 100% Complete as of Dec 14th. | 55 | PS |  |  |
| EM03YPI136 | 03Y IDP - Detail Design | 2d | 2006-09-11 A | 2006-09-25 A | EM03YPI143 | 100% |  | 2006-09-11 | 2006-09-12 |  |  |  |  | EBWK 5 Day MEC Holidays | 2006-07-29 | 132 | 0 | 0 | 01A | PI132 | 03 | EM | P50 | 03Y | PI | P11 | P | E | 13 | 12 | E5B5 |  |  |  |  |  |  |  |  |
| EM05API142 | 05A Detail OP's & Services Model Review Mtg | 5d | 2006-09-13 A | 2006-09-14 A | EM05API134, EM5ASY172 | 100% |  | 2006-09-13 | 2006-09-19 |  |  |  |  | EBWK 5 Day MEC Holidays | 2006-07-29 | 134 | 0 | 0 | 01A | PI134 | 03 | EM | P20 | 05A | PI | P09 | P | E | 30 | 27 | E5B5 |  |  |  |  |  |  |  |  |
| EM03API142 | 03A OP's & Serv. Model Review Comment Resolution | 2d | 2006-09-14 A | 2006-09-15 A | EM03API141 | 100% |  |  |  |  |  |  |  | EBWK 5 Day MEC Holidays | 2006-07-29 | 130 | 0 | 0 | 03A | PI130 | 03 | EM | P20 | 03A | PI | P10 | P | E | 25 | 13 | E5B5 |  |  |  |  |  |  |  |  |
| EM05API143 | 05A OP's & Serv. Model Review Comments Resolution | 5d | 2006-09-15 A | 2006-10-05 A | EM05API142 | 100% |  | 2006-09-15 | 2006-09-21 |  |  |  |  | EBWK 5 Day MEC Holidays | 2006-07-29 | 134 | 0 | 0 | 01A | PI134 | 03 | EM | P20 | 05A | PI | P10 | P | E | 30 | 27 | E5B5 |  |  |  |  |  |  |  |  |
| EM03EPI142 | 03E Detail OP's & Service Model Review Mtg | 2d | 2006-09-18 A | 2006-09-21 A | EM03ESY172 | 100% |  | 2006-09-18 | 2006-09-19 |  |  | start on or after 2006-09-18 |  | EBWK 5 Day MEC Holidays | 2006-07-29 | 130 | 6.6 | 0 | 03E | PI130 | 03 | EM | P20 | 03E | PI | P09 | P | E | 35 | 33 | E5B5 | 2 | 2 | 2 |  |  |  |  |  |
| EM03BPI135 | 03B A/G Piping Iso's - Issue IFC | 15d | 2006-09-25 A | 2006-10-27 A | EM03BPI134 SS+20d, EM03BPI134 FF, EM03BMD229, EK03BPI143 | 100% |  | 2006-09-25 | 2006-10-13 |  |  |  |  | EBWK 5 Day MEC Holidays | 2006-07-29 | 135 | 0 | 0 | 03B | PI135 | 03 | EM | P50 | 03B | PI | P13 | P | E | 20 | 23 | E5B5 |  |  |  | 100% Complete as of Oct. 26th., September Milestone | 5 | PS |  |  |
| EM03BPI138 | 03B Design / Issue Pipe Supports IFC | 45d | 2006-09-25 A | 2006-10-27 A | EK000PI051 FF, EM03BPI132, EM03BPI135 FF, EM03BPI134 SS | 100% |  | 2006-09-25 | 2006-11-28 |  |  |  |  | EBWK 5 Day MEC Holidays | 2006-07-29 | 138 | 0 | 0 | 03B | PI138 | 03 | EM | P60 | 03B | PI | P14 | P | E | 20 | 23 | E5B5 |  |  |  | 100% Complete as of Oct. 26th., September Milestone | 55 | PS |  |  |
| EM03EPI143 | 03E OP's & Serv. Model Review Comment Resolution | 2d | 2006-09-25 A | 2006-12-20 A | EM03EPI142 | 100% |  | 2006-09-25 | 2006-09-26 |  |  |  |  | EBWK 5 Day MEC Holidays | 2006-07-29 | 130 | 6.6 | 0 | 03E | PI130 | 03 | EM | P20 | 03E | PI | P10 | P | E | 35 | 33 | E5B5 | 2 | 2 | 4 | MEC 1st Round |  |  |  |  |
| EM03EPI135 | 03E A/G Piping Iso's - Issue IFC | 28d | 2006-10-04 A | 2006-12-18 A | EK03EPI144 FF | 100% |  | 2006-10-04 | 2006-11-13 |  |  |  |  | EBWK 5 Day MEC Holidays | 2006-07-29 | 135 | 6.6 | 1 | 03E | PI135 | 03 | EM | P50 | 03E | PI | P13 | P | E | 35 | 33 | E5B5 | 28 | 28 | 40 | 100% Complete as of Dec 14th. | 10 | PS |  |  |
| EM03EPI138 | 03E Design / Issue Pipe Supports IFC | 45d | 2006-10-04 A | 2006-12-18 A | EK000PI051 FF, EM03EPI132, EM03EPI135 SS, EM03EPI134 SS | 100% |  | 2006-10-04 | 2006-12-07 |  |  |  |  | EBWK 5 Day MEC Holidays | 2006-07-29 | 138 | 0 | 0 | 03E | PI138 | 03 | EM | P60 | 03E | PI | P14 | P | E | 35 | 33 | E5B5 |  |  |  | 100% Complete as of Dec 14th. | 60 | PS |  |  |
| EM03EPI136 | 03E IDP - Detail Design | 5d | 2006-10-06 A | 2006-12-20 A | EM03EPI143 FF | 100% |  | 2006-10-06 | 2006-10-12 |  |  |  |  | EBWK 5 Day MEC Holidays | 2006-07-29 | 132 | 6.6 | 0 | 01A | PI132 | 03 | EM | P50 | 03E | PI | P11 | P | E | 35 | 33 | E5B5 | 5 | 5 | 5 |  |  |  |  |  |
| EM05BPI141 | 05B Model Review Comment Resolution | 3d | 2006-12-04 A | 2007-02-09 | EM05BPI130 |  | 10d | 2006-12-04 | 2006-12-06 | 75d | 0d |  | 2007-02-09 | EBWK 5 Day MEC Holidays | 2006-07-29 |  | 0 | 0.7 |  |  | 03 | EM | P50 | 05B | PI | P04 | P | E |  |  |  | 3 | 5 | 10 |  |  |  |  | 05A |
| EM05BPI142 | 05B Detail OP's & Services Model Review Mtg | 1d | 2007-03-05 | 2007-03-05 | EM05BPI134, EM05BSY172 |  |  |  |  | 75d | 0d |  |  | EBWK 5 Day MEC Holidays | 2006-07-29 | 134 | 0 | 0 | 01A | PI134 | 03 | EM | P20 | 05B | PI | P09 | P | E | 30 | 27 | E5B5 | 2 | 2 | 3 |  |  |  |  | 05A |
| EM05BPI143 | 05B OP's & Serv. Model Review Comments Resolution | 3d | 2007-03-06 | 2007-03-08 | EM05BPI142 |  |  |  |  | 75d | 0d |  |  | EBWK 5 Day MEC Holidays | 2006-07-29 | 134 | 0 | 1 | 01A | PI134 | 03 | EM | P20 | 05B | PI | P10 | P | E | 30 | 27 | E5B5 | 5 | 5 | 10 |  |  |  |  | 05A |

| ID | WBS | Activity | Type | Duration | Start | Finish | Predecessors | Complete | Planned start | Planned finish | Calendar | zData Date | Sequence | PCA Criticality Index | PCA Duration Sensitivity | User Defined Field 1 | User Definer Field 2 | EB02 - UNIT | EB01 - RESP | EB06 - WORK OP | EB03 - AREA | EB05 - DISCIPLINE | EB10 - KEY | EB04 - CLASS | EB11 - FLAG | EB00 - EPC | EB15 - Civil / U/G Path of Construction | EB16 - Piping Path of Construction | EB17 - Suffix | user_text1 | Optimistic Duration | Most Likely Duration | Pessimistic Duration | user_integer1 | EB21 - Rev 2 Risk Associations | EB19 - System | user_integer2 |
| --- | --- | --- | --- | --- | --- | --- | --- | --- | --- | --- | --- | --- | --- | --- | --- | --- | --- | --- | --- | --- | --- | --- | --- | --- | --- | --- | --- | --- | --- | --- | --- | --- | --- | --- | --- | --- | --- |
|  | PR | **Process Engineering** |  |  |  |  |  |  |  |  |  |  |  |  |  |  |  |  |  |  |  |  |  |  |  |  |  |  |  |  |  |  |  |  |  |  |  |
|  | SE | **Safety Engineering** |  |  |  |  |  |  |  |  |  |  |  |  |  |  |  |  |  |  |  |  |  |  |  |  |  |  |  |  |  |  |  |  |  |  |  |
|  | SY | **Systems Engineering** |  |  | 2006-05-11 | 2006-11-30 |  |  |  |  |  |  |  |  |  |  |  |  |  |  |  |  |  |  |  |  |  |  |  |  |  |  |  |  |  |  |  |
| EM03CSY172 |  | 03C P&IDs & Line List Issue - IFD | milestone | 0d | 2006-05-11 A | 2006-05-11 A | EK03CSY170 FF, EM03CPI134 FF+5d | 100% | 2006-05-25 | 2006-05-25 |  | 2006-07-29 | 172 | 0 | 0 | 03C | SY172 | 03 | EM | YP0 | 03C | SY | Y3 | Y | PS | E | 31 | 14 | E5B5 |  |  |  |  |  |  |  |  |
| EM03DSY172 |  | 03D P&IDs & Line List Issue - IFD | milestone | 0d | 2006-07-19 A | 2006-07-19 A | EK03DSY170 FF | 100% | 2006-07-17 | 2006-07-17 |  | 2006-07-29 | 172 | 0 | 0 | 03D | SY172 | 03 | EM | YP0 | 03D | SY | Y3 | Y | PS | E | 12 | 32 | E5B5 | 12-Jul-06 |  |  |  |  |  |  |  |
| EM03ASY172 |  | 03A P&IDs & Line List Issue - IFD |  | 1d | 2006-07-24 A | 2006-07-24 A | EK03ASY170 FF, EM03API134 SS+18d | 100% | 2006-09-07 | 2006-09-07 |  | 2006-07-29 | 172 | 0 | 0 | 03A | SY172 | 03 | EM | YP0 | 03A | SY | Y3 | Y | PS | E | 25 | 13 | E5B5 |  |  |  |  |  |  |  |  |
| EM03CSY272 |  | 03C P&IDs & Line List Issue - IFC | milestone | 0d | 2006-07-31 A | 2006-07-31 A | EM03CSY172 FF, EM03CPI135 SF | 100% | 2006-08-11 | 2006-08-11 |  | 2006-07-29 | 172 | 0 | 0 | 03C | SY172 | 03 | EM | YP0 | 03C | SY | Y4 | Y | PS | E | 31 | 14 | E5B5 |  |  |  |  |  |  |  |  |
| EM03FSY172 |  | 03F P&IDs & Line List Issue - IFD | milestone | 0d | 2006-08-14 A | 2006-08-14 A | EM03FPI134 FF, EK03FSY170 FF | 100% |  |  |  | 2006-07-29 | 172 | 0 | 0 | EK200 | SY172 | 03 | EM | YP0 | 03F | SY | Y3 | Y | PS | E | 26 | 38 | E5B5 |  |  |  |  |  |  |  |  |
| EM03YSY172 |  | 03Y P&IDs & Line List Issue - IFD | milestone | 0d | 2006-08-16 A | 2006-08-16 A | EK03YSY170 FF | 100% |  |  |  | 2006-07-29 | 172 | 0 | 0 | 03Y | SY172 | 03 | EM | YP0 | 03Y | SY | Y3 | Y | PS | E | 13 | 12 | E5B5 |  |  |  |  |  |  |  |  |
| EM03BSY172 |  | 03B P&IDs & Line List Issue - IFD | milestone | 0d | 2006-08-31 A | 2006-08-31 A | EK03BSY170 FF | 100% | 2006-09-11 | 2006-09-11 |  | 2006-07-29 | 172 | 0 | 0 | 03B | SY172 | 03 | EM | YP0 | 03B | SY | Y3 | Y | PS | E | 20 | 23 | E5B5 |  |  |  |  |  |  |  |  |
| EM03ESY172 |  | 03E P&IDs & Line List Issue - IFD | milestone | 0d | 2006-09-12 A | 2006-09-12 A | EK03ESY170 FF | 100% |  |  |  | 2006-07-29 | 172 | 0 | 0 | 03E | SY172 | 03 | EM | YP0 | 03E | SY | Y3 | Y | PS | E | 35 | 33 | E5B5 |  |  |  |  |  |  |  |  |
| EM03DSY272 |  | 03D P&IDs & Line List Issue - IFC | milestone | 0d | 2006-10-23 A | 2006-10-23 A | EM03DSY172 FF, EM03DPI135 FF | 100% |  |  |  | 2006-07-29 | 172 | 0 | 0 | 03D | SY172 | 03 | EM | YP0 | 03D | SY | Y4 | Y | PS | E | 12 | 32 | E5B5 | Completed 10/19/06 |  |  |  |  |  |  |  |
| EM03ASY272 |  | 03A P&IDs & Line List Issue - IFC | milestone | 0d | 2006-10-27 A | 2006-10-27 A | EM03ASY172 FF, EM03API135 FF | 100% | 2006-11-03 | 2006-11-03 |  | 2006-07-29 | 172 | 0 | 0 | 03A | SY172 | 03 | EM | YP0 | 03A | SY | Y4 | Y | PS | E | 25 | 13 | E5B5 | Completed 10/19/06 |  |  |  |  |  |  |  |
| EM03YSY272 |  | 03Y P&IDs & Line List Issue - IFC | milestone | 0d | 2006-10-27 A | 2006-10-27 A | EM03YSY172 FF, EM03YPI135 FF+5d | 100% |  |  |  | 2006-07-29 | 172 | 0 | 0 | 03Y | SY172 | 03 | EM | YP0 | 03Y | SY | Y4 | Y | PS | E | 13 | 12 | E5B5 | Completed 10/19/06 |  |  |  |  |  |  |  |
| EM03FSY272 |  | 03F P&IDs & Line List Issue - IFC | milestone | 0d | 2006-10-31 A | 2006-10-31 A | EM03FSY172 FF | 100% | 2006-11-27 | 2006-11-27 |  | 2006-07-29 | 172 | 0 | 0 | EK200 | SY172 | 03 | EM | YP0 | 03F | SY | Y4 | Y | PS | E | 26 | 38 | E5B5 |  |  |  |  |  |  |  |  |
| EM03ESY272 |  | 03E P&IDs & Line List Issue - IFC | milestone | 0d | 2006-11-30 A | 2006-11-30 A | EM03ESY172 FF, EM03EPI135 FF | 100% | 2006-11-27 | 2006-11-27 |  | 2006-07-29 | 172 | 0 | 0 | 03E | SY172 | 03 | EM | YP0 | 03E | SY | Y4 | Y | PS | E | 35 | 33 | E5B5 |  |  |  |  |  |  |  |  |
| EM03BSY272 |  | 03B P&IDs & Line List Issue - IFC | milestone | 0d | 2006-11-30 A | 2006-11-30 A | EM03BSY172 FF, EM03BPI135 FF+23d | 100% | 2006-12-01 | 2006-12-01 |  | 2006-07-29 | 172 | 0 | 0 | 03B | SY172 | 03 | EM | YP0 | 03B | SY | Y4 | Y | PS | E | 20 | 23 | E5B5 |  |  |  |  |  |  |  |  |
|  | 04 | **Corridor** |  |  | 2006-09-11 | 2006-10-27 |  |  |  |  |  |  |  |  |  |  |  |  |  |  |  |  |  |  |  |  |  |  |  |  |  |  |  |  |  |  |  |
|  | AR | **Architecture Engineering** |  |  |  |  |  |  |  |  |  |  |  |  |  |  |  |  |  |  |  |  |  |  |  |  |  |  |  |  |  |  |  |  |  |  |  |
|  | PE | **Project Engineering** |  |  |  |  |  |  |  |  |  |  |  |  |  |  |  |  |  |  |  |  |  |  |  |  |  |  |  |  |  |  |  |  |  |  |  |
|  | PS | **Planning & Scheduling** |  |  |  |  |  |  |  |  |  |  |  |  |  |  |  |  |  |  |  |  |  |  |  |  |  |  |  |  |  |  |  |  |  |  |  |
|  | QM | **Quality Mgmt.** |  |  |  |  |  |  |  |  |  |  |  |  |  |  |  |  |  |  |  |  |  |  |  |  |  |  |  |  |  |  |  |  |  |  |  |
|  | CE | **Chief Engineering** |  |  |  |  |  |  |  |  |  |  |  |  |  |  |  |  |  |  |  |  |  |  |  |  |  |  |  |  |  |  |  |  |  |  |  |
|  | CV | **Civil Engineering** |  |  |  |  |  |  |  |  |  |  |  |  |  |  |  |  |  |  |  |  |  |  |  |  |  |  |  |  |  |  |  |  |  |  |  |
|  | EL | **Electrical Engineering** |  |  |  |  |  |  |  |  |  |  |  |  |  |  |  |  |  |  |  |  |  |  |  |  |  |  |  |  |  |  |  |  |  |  |  |
|  | EV | **Environmental Engineering** |  |  |  |  |  |  |  |  |  |  |  |  |  |  |  |  |  |  |  |  |  |  |  |  |  |  |  |  |  |  |  |  |  |  |  |
|  | FP | **Fire Protection Engineering** |  |  |  |  |  |  |  |  |  |  |  |  |  |  |  |  |  |  |  |  |  |  |  |  |  |  |  |  |  |  |  |  |  |  |  |
|  | GE | **General Engineering (All Disciplines)** |  |  |  |  |  |  |  |  |  |  |  |  |  |  |  |  |  |  |  |  |  |  |  |  |  |  |  |  |  |  |  |  |  |  |  |
|  | IC | **Control Sytems Engineering** |  |  |  |  |  |  |  |  |  |  |  |  |  |  |  |  |  |  |  |  |  |  |  |  |  |  |  |  |  |  |  |  |  |  |  |
|  | MB | **Furnaces & Flares Engineering** |  |  |  |  |  |  |  |  |  |  |  |  |  |  |  |  |  |  |  |  |  |  |  |  |  |  |  |  |  |  |  |  |  |  |  |
|  | MC | **Exchangers Engineering** |  |  |  |  |  |  |  |  |  |  |  |  |  |  |  |  |  |  |  |  |  |  |  |  |  |  |  |  |  |  |  |  |  |  |  |
|  | MD | **Vessels Engineering** |  |  |  |  |  |  |  |  |  |  |  |  |  |  |  |  |  |  |  |  |  |  |  |  |  |  |  |  |  |  |  |  |  |  |  |
|  | MJ | **Machinery Engineering** |  |  |  |  |  |  |  |  |  |  |  |  |  |  |  |  |  |  |  |  |  |  |  |  |  |  |  |  |  |  |  |  |  |  |  |
|  | PI | **Piping Engineering** |  |  | 2006-09-11 | 2006-10-27 |  |  |  |  |  |  |  |  |  |  |  |  |  |  |  |  |  |  |  |  |  |  |  |  |  |  |  |  |  |  |  |
| EM04API120 |  | 04A Plant Layout Model |  | 60d | 2006-09-11 A | 2006-09-29 A | EK020SY145 FF+10d, EK04API030, EK04ASY170 FF+20d, EM000PI025 FF | 100% | 2006-09-11 | 2006-12-05 | EBWK 5 Day MEC Holidays | 2006-07-29 | 120 | 0.8 | 1.9 | 04A | PI120 | 04 | EM | P20 | 04A | PI | P02 | P | CD | E | 28 | 41 | E5B5 |  | 8 | 15 | 20 | 8 | 05A |  |  |
| EM04API134 |  | 04A Plant Detail Model Development |  | 30d | 2006-09-30 A | 2006-10-27 A | EM04API120 FS+1d | 100% | 2006-10-02 | 2006-11-13 | EBWK 5 Day MEC Holidays | 2006-07-29 | 134 | 0 | 0 | 04A | PI134 | 04 | EM | P50 | 04A | PI | P08 | U |  | E | 28 | 41 | E5B5 |  | 15 | 30 | 40 |  | 05A | 04U |  |
| EM04API138 |  | 04A Design / Issue Pipe & Supports IFC |  | 45d | 2006-09-30 A | 2006-10-27 A | EK000PI051 FF, EM04API134 FF, EK04AIC300 FF | 100% | 2006-10-02 | 2006-12-05 | EBWK 5 Day MEC Holidays | 2006-07-29 | 138 | 0 | 1.2 | 04A | PI138 | 04 | EM | P60 | 04A | PI | P14 | U | PS | E | 27 | 4 | E5B5 |  | 15 | 25 | 45 | 45 | 05A | 04U | 40 |

| ID | WBS | Activity | Duration | Start | Finish | Predecessors | Complete | Remaining | Planned start | Planned finish | Total float | Free float | Constraint | Expected finish | zData Date | Sequence | PCA Criticality Index | PCA Duration Sensitivity | User Defined Field 1 | User Definer Field 2 | EB02 - UNIT | EB01 - RESP | EB06 - WORK OP | EB03 - AREA | EB05 - DISCIPLINE | EB10 - KEY | EB04 - CLASS | EB00 - EPC | EB15 - Civil / U/G Path of Construction | EB16 - Piping Path of Construction | EB17 - Suffix | user_integer2 | user_text1 | EB07 - REQN | EB08 - TAG | EB11 - FLAG | EB12 - TEMP | Optimistic Duration | Most Likely Duration | Pessimistic Duration | user_integer1 | EB21 - Rev 2 Risk Associations |
| --- | --- | --- | --- | --- | --- | --- | --- | --- | --- | --- | --- | --- | --- | --- | --- | --- | --- | --- | --- | --- | --- | --- | --- | --- | --- | --- | --- | --- | --- | --- | --- | --- | --- | --- | --- | --- | --- | --- | --- | --- | --- | --- |
|  | PR | **Process Engineering** |  |  |  |  |  |  |  |  |  |  |  |  |  |  |  |  |  |  |  |  |  |  |  |  |  |  |  |  |  |  |  |  |  |  |  |  |  |  |  |  |
|  | SE | **Safety Engineering** |  |  |  |  |  |  |  |  |  |  |  |  |  |  |  |  |  |  |  |  |  |  |  |  |  |  |  |  |  |  |  |  |  |  |  |  |  |  |  |  |
|  | SY | **Systems Engineering** |  |  |  |  |  |  |  |  |  |  |  |  |  |  |  |  |  |  |  |  |  |  |  |  |  |  |  |  |  |  |  |  |  |  |  |  |  |  |  |  |
|  | 05 | **Dock / Storage** |  | 2005-10-31 | 2007-03-23 |  |  |  |  |  |  |  |  |  |  |  |  |  |  |  |  |  |  |  |  |  |  |  |  |  |  |  |  |  |  |  |  |  |  |  |  |  |
|  | AR | **Architecture Engineering** |  |  |  |  |  |  |  |  |  |  |  |  |  |  |  |  |  |  |  |  |  |  |  |  |  |  |  |  |  |  |  |  |  |  |  |  |  |  |  |  |
|  | PE | **Project Engineering** |  |  |  |  |  |  |  |  |  |  |  |  |  |  |  |  |  |  |  |  |  |  |  |  |  |  |  |  |  |  |  |  |  |  |  |  |  |  |  |  |
|  | PS | **Planning & Scheduling** |  |  |  |  |  |  |  |  |  |  |  |  |  |  |  |  |  |  |  |  |  |  |  |  |  |  |  |  |  |  |  |  |  |  |  |  |  |  |  |  |
|  | QM | **Quality Mgmt.** |  |  |  |  |  |  |  |  |  |  |  |  |  |  |  |  |  |  |  |  |  |  |  |  |  |  |  |  |  |  |  |  |  |  |  |  |  |  |  |  |
|  | CE | **Chief Engineering** |  |  |  |  |  |  |  |  |  |  |  |  |  |  |  |  |  |  |  |  |  |  |  |  |  |  |  |  |  |  |  |  |  |  |  |  |  |  |  |  |
|  | CV | **Civil Engineering** |  | 2005-12-22 | 2007-02-26 |  |  |  |  |  |  |  |  |  |  |  |  |  |  |  |  |  |  |  |  |  |  |  |  |  |  |  |  |  |  |  |  |  |  |  |  |  |
| EM05ACV120 |  | 05A Design & Model PR Structural Steel | 20d | 2005-12-22 A | 2006-03-28 A | EM05API120 SS | 100% |  | 2005-12-22 | 2006-01-20 |  |  |  |  | 2006-07-29 | 120 | 0 | 0 | 05A | CV120 | 05 | EM | S10 | 05A | CV | C2 | S | E | 15 | 29 | E5B5 |  |  |  |  |  |  |  |  |  |  |  |
| EM05ACV130 |  | 05A Design & Model Structural Piperack Fdns | 25d | 2006-01-02 A | 2006-03-27 A | EM05API120 SS+10d | 100% |  | 2006-01-03 | 2006-02-06 |  |  |  |  | 2006-07-29 | 125 | 0 | 0 | 01Y | CV125 | 05 | EM | C40 | 05A | CV | C3 | C | E | 15 | 29 | E5B5 |  |  |  |  |  |  |  |  |  |  |  |
| EM05ACV160 |  | 05A Design & Model Major Eq. Fdns | 25d | 2006-02-03 A | 2006-07-28 A | EM05API120 SS+29d, PK05AMJV02 FF+10d | 100% |  | 2006-02-27 | 2006-03-31 |  |  |  |  | 2006-07-29 | 160 | 0 | 0 | 05A | CV160 | 05 | EM | C30 | 05A | CV | C3 | C | E |  |  | E5B5 |  |  |  |  |  |  |  |  |  |  |  |
| EK000MF32D |  | 05A MF312 2105-F Water Tank - Fdn Dwgs - IFC | 20d | 2006-08-02 A | 2006-12-22 A | PK000MF32D, EM05API200 FF, EM05API132 FF | 100% |  | 2006-08-02 | 2006-08-29 |  |  |  |  | 2006-07-29 | 164 | 0 | 0 | 05A | CV164 | 05 | EM | C30 | 05A | CV | C5 | C | E | 15 | 29 | E5B5 | 10 | Need to have Achor Bolts & Loading Verification | MF312 | 2105F | PS | X |  |  |  |  |  |
| EM05ACV126 |  | 05A Conceptual Misc. Steel Design/ Model | 20d | 2006-09-18 A | 2006-12-01 A | EM05ACV120 FF+10d, EM05API132, EM05API136 FF+5d | 100% |  | 2006-09-18 | 2006-10-13 |  |  |  |  | 2006-07-29 | 126 | 0 | 0 | 05A | CV126 | 05 | EM | S30 | 05A | CV | C2 | S | E | 15 | 29 | E5B5 |  |  |  |  |  |  |  |  |  |  |  |
| EM05ACV166 |  | 05A Conceptual Misc. Foundation Design/ Model | 15d | 2006-09-18 A | 2006-12-01 A | EM05API132, EM05API136 FF+5d | 100% |  | 2006-09-18 | 2006-10-06 |  |  |  |  | 2006-07-29 | 166 | 0 | 0 | 05A | CV166 | 05 | EM | C60 | 05A | CV | C3 | C | E | 15 | 29 | E5B5 |  |  |  |  |  |  |  |  |  |  |  |
| EM05ACV164 |  | 05A Update Model Major Eq. Fdns & Issue Dwgs-IFC | 10d | 2006-09-21 A | 2007-02-26 | EM05API132, EM05ACV160, EK000CV045, EM05API200 FF+10d, EM05UPI178 FF+10d, PK000MJ36J FF+10d, PK000MJ36N FF+10d, PK000ML33N FF+10d, PK05AMF05 FF+10d, PK05AMF25 FF+10d, PK000MF32D, PK05AMF34 FF+10d, PK05AMB47 FF+10d, PK05AMJV05 FF+10d, PK05AMLV02 FF+10d, PK05AMJV08 FF+10d, PK05AMJV10 FF+10d, PK05AMLV05 FF+10d |  | 21d | 2006-09-21 | 2006-10-04 | -14d | 29d |  |  | 2006-07-29 | 164 | 0 | 0 | 05A | CV164 | 05 | EM | C30 | 05A | CV | C5 | C | E | 15 | 29 | E5B5 | 10 |  |  |  | PS | X |  |  |  |  |  |
| EM05ACV122 |  | 05A Update Model PR Struct Steel & Issue Dwgs - IFC | 10d | 2006-12-26 A | 2007-02-09 | EM05ACV120, EM05API132, EM05API200 FF+15d, EM05UPI178 FF+15d, EM05API136 FF+15d, PK000MJ36J FF+15d, PK000MJ36N FF+15d, PK000ML33N FF+15d |  | 10d | 2006-12-26 | 2007-01-08 | 21d | 0d |  | 2007-02-09 | 2006-07-29 | 122 | 0 | 0 | 05A | CV122 | 05 | EM | S10 | 05A | CV | C4 | S | E | 15 | 29 | E5B5 | 10 |  |  |  | PS |  |  |  |  |  |  |
| EM05ACV127 |  | 05A Model Misc. Steel & Issue Dwgs - IFC | 5d | 2006-12-26 A | 2007-02-09 | EM05ACV126 |  | 10d | 2006-12-26 | 2007-01-01 | 25d | 0d | start on or after 2006-12-18 | 2007-02-09 | 2006-07-29 | 127 | 0 | 0 | 05A | CV127 | 05 | EM | S30 | 05A | CV | C4 | S | E | 15 | 29 | E5B5 | 5 |  |  |  | PS |  |  |  |  |  |  |
| EM05ACV167 |  | 05A Update Model Misc Fdns & Issue Dwgs - IFC | 5d | 2006-12-26 A | 2007-02-23 | EM05ACV166, EM05ACV127 FF, EK000CV045, EM05BCV122 FF |  | 8d | 2006-12-26 | 2007-01-01 | 111d | 75d |  |  | 2006-07-29 | 167 | 0 | 0 | 05A | CV167 | 05 | EM | C60 | 05A | CV | C5 | C | E | 15 | 29 | E5B5 | 5 |  |  |  | PS |  |  |  |  |  |  |
| EM05BCV167 |  | 05B Design / Model / IFC - Equip. Fdn's. | 40d | 2007-01-18 A | 2007-02-19 | EK05BPI030, EM05BPI200 SS, PK05BMLV02 | 100% | 0d | 2007-01-18 | 2007-03-14 | 221d | 0d |  | 2007-02-16 | 2006-07-29 | 167 | 0 | 2 | 05B | CV167 | 05 | EM | C60 | 05B | CV | C5 | C | E | 38 | 40 | E5B5 | 5 | Area On Hold for Civil |  |  | PS |  | 21 | 28 | 35 | 5 | 05A |
| EM05BCV122 |  | 05B Design / Model / IFC - Sleeper Steel & FDN's | 40d | 2007-01-22 A | 2007-02-23 | EK05BPI030, PK05BMU07 | 50% | 20d | 2007-01-22 | 2007-03-16 | 71d | 0d |  |  | 2006-07-29 | 122 | 0 | 3 | 01D | CV122 | 05 | EM | S10 | 05B | CV | C4 | S | E | 38 | 40 | E5B5 | 15 |  |  |  | PS |  | 15 | 21 | 28 | 15 | 05A |
| EM05BCV133 |  | 05B Design / Model / IFC - S/S at Jetty | 35d | 2007-01-22 A | 2007-02-23 | EK05BPI030 FS+5d | 43% | 20d | 2007-01-22 | 2007-03-09 | 71d | 0d |  |  | 2006-07-29 | 128 | 0 | 0.4 | 01D | CV128 | 05 | EM | C40 | 05B | CV | C5 | C | E | 38 | 40 | E5B5 | 15 |  |  |  | PS |  | 15 | 21 | 28 | 20 | 05A |
| EM05ACV133 |  | 05A Update Model Structural Piperack Fdns & Issue Dwgs - IFC | 10d | 2007-01-31 | 2007-02-09 | EM05ACV130, EM05API132, EM05ACV122 FF, EK000CV045, EM05API200 FF+10d, EM05UPI178 FF+10d, PK000MJ36J FF+10d, PK000MJ36N FF+10d, PK000ML33N FF+10d |  |  | 2007-01-31 | 2007-02-13 | 121d | 85d |  |  | 2006-07-29 | 128 | 0 | 0 | 01Y | CV128 | 05 | EM | C40 | 05A | CV | C5 | C | E | 15 | 29 | E5B5 | 10 |  |  |  | PS |  |  |  |  |  |  |

| ID | WBS | Activity | Duration | Start | Finish | Predecessors | Complete | Remaining | Planned start | Planned finish | Total float | Free float | Constraint | Expected finish | Calendar | zData Date | Sequence | PCA Criticality Index | PCA Duration Sensitivity | User Defined Field 1 | User Definer Field 2 | EB02 - UNIT | EB01 - RESP | EB06 - WORK OP | EB03 - AREA | EB05 - DISCIPLINE | EB04 - CLASS | EB00 - EPC | EB15 - Civil / U/G Path of Construction | EB16 - Piping Path of Construction | EB17 - Suffix | Optimistic Duration | Most Likely Duration | Pessimistic Duration | user_integer1 | EB11 - FLAG | EB21 - Rev 2 Risk Associations | user_text1 | EB07 - REQN | EB10 - KEY | EB09 - IPMS | EB19 - System | user_integer2 | EB14 - RISK |
| --- | --- | --- | --- | --- | --- | --- | --- | --- | --- | --- | --- | --- | --- | --- | --- | --- | --- | --- | --- | --- | --- | --- | --- | --- | --- | --- | --- | --- | --- | --- | --- | --- | --- | --- | --- | --- | --- | --- | --- | --- | --- | --- | --- | --- |
|  | EL | **Electrical Engineering** |  | 2006-01-16 | 2006-06-06 |  |  |  |  |  |  |  |  |  |  |  |  |  |  |  |  |  |  |  |  |  |  |  |  |  |  |  |  |  |  |  |  |  |  |  |  |  |  |  |
| EM05AEL120 |  | 05A Electrical Conceptual Layouts | 25d | 2006-01-16 A | 2006-03-22 A | EK05ASY170 FF+20d, EK050SY050, EK05API030, EM05API120 SS | 100% |  | 2006-01-16 | 2006-02-17 |  |  |  |  |  | 2006-07-29 | 120 | 0 | 0 | 05A | EL120 | 05 | EM | P20 | 05A | EL | E | E | 15 | 29 | E5B5 |  |  |  |  |  |  |  |  |  |  |  |  |  |
| EM05BEL120 |  | 05B Electrical Conceptual Layouts | 21d | 2006-05-22 A | 2006-06-06 A | EK05BSY170 FF, EK050SY050, EK05BPI030 SS | 100% |  | 2006-06-09 | 2006-07-07 |  |  |  |  |  | 2006-07-29 | 120 | 0 | 0 | 05B | EL120 | 05 | EM | P20 | 05B | EL | E | E | 38 | 40 | E5B5 | 15 | 20 | 25 | 21 | CD | 05A |  |  |  |  |  |  |  |
|  | EV | **Environmental Engineering** |  |  |  |  |  |  |  |  |  |  |  |  |  |  |  |  |  |  |  |  |  |  |  |  |  |  |  |  |  |  |  |  |  |  |  |  |  |  |  |  |  |  |
|  | FP | **Fire Protection Engineering** |  |  |  |  |  |  |  |  |  |  |  |  |  |  |  |  |  |  |  |  |  |  |  |  |  |  |  |  |  |  |  |  |  |  |  |  |  |  |  |  |  |  |
|  | GE | **General Engineering (All Disciplines)** |  |  |  |  |  |  |  |  |  |  |  |  |  |  |  |  |  |  |  |  |  |  |  |  |  |  |  |  |  |  |  |  |  |  |  |  |  |  |  |  |  |  |
|  | IC | **Control Sytems Engineering** |  |  |  |  |  |  |  |  |  |  |  |  |  |  |  |  |  |  |  |  |  |  |  |  |  |  |  |  |  |  |  |  |  |  |  |  |  |  |  |  |  |  |
|  | MB | **Furnaces & Flares Engineering** |  |  |  |  |  |  |  |  |  |  |  |  |  |  |  |  |  |  |  |  |  |  |  |  |  |  |  |  |  |  |  |  |  |  |  |  |  |  |  |  |  |  |
|  | MC | **Exchangers Engineering** |  |  |  |  |  |  |  |  |  |  |  |  |  |  |  |  |  |  |  |  |  |  |  |  |  |  |  |  |  |  |  |  |  |  |  |  |  |  |  |  |  |  |
|  | MD | **Vessels Engineering** |  | 2006-07-03 | 2006-07-28 |  |  |  |  |  |  |  |  |  |  |  |  |  |  |  |  |  |  |  |  |  |  |  |  |  |  |  |  |  |  |  |  |  |  |  |  |  |  |  |
| EM05AMD229 |  | 05A Vessel Steel Release IFC | 20d | 2006-07-03 A | 2006-07-28 A | EM05AMD228 FF | 100% |  | 2006-08-31 | 2006-09-28 |  |  |  |  |  | 2006-07-29 | 224 | 0 | 0 |  |  | 05 | EM | MD2 | 05A | MD | M | E | 23 | 19 | E1B1 |  |  |  |  | PS |  | Not KBR activity, to be done by DSD. | P1080 | P16 | M |  |  |  |
|  | MJ | **Machinery Engineering** |  |  |  |  |  |  |  |  |  |  |  |  |  |  |  |  |  |  |  |  |  |  |  |  |  |  |  |  |  |  |  |  |  |  |  |  |  |  |  |  |  |  |
|  | PI | **Piping Engineering** |  | 2005-10-31 | 2007-03-23 |  |  |  |  |  |  |  |  |  |  |  |  |  |  |  |  |  |  |  |  |  |  |  |  |  |  |  |  |  |  |  |  |  |  |  |  |  |  |  |
| EM05UPI175 |  | 05U Plant Layout Model - Common | 15d | 2005-10-31 A | 2005-11-11 A | EK000YA002 | 100% |  | 2005-10-31 | 2005-11-21 |  |  |  |  | EBWK 5 Day MEC Holidays | 2006-07-29 |  | 0 | 0 |  |  | 05 | EM | U20 | 05U | PI | U | E | 4 | 8 | E5B5 |  |  |  |  |  |  |  |  | P02 |  | 05U |  |  |
| EM05API120 |  | 05A Plant Layout Model | 60d | 2005-12-19 A | 2006-03-28 A | EK020SY145 FF+10d, EK05API030, EK05ASY170 FF, PK05AMJ154 FF+15d, EK050SY050, EM000PI025 FF, PK05AML100 FF+15d, EK050I1100 FF | 100% |  | 2005-12-19 | 2006-03-17 |  |  |  |  | EBWK 5 Day MEC Holidays | 2006-07-29 | 120 | 0 | 0 | 05A | PI120 | 05 | EM | P20 | 05A | PI | P | E | 15 | 29 | E5B5 |  |  |  |  |  |  |  |  | P02 |  |  |  |  |
| EM05UPI141 |  | 05U Model Review Mtg | 2d | 2006-02-27 A | 2006-02-28 A | EM05UPI175 | 100% |  | 2006-03-20 | 2006-03-22 |  |  |  |  | EBWK 5 Day MEC Holidays | 2006-07-29 |  | 0 | 0 |  |  | 05 | EM | U20 | 05U | PI | U | E | 4 | 8 | E2B2 |  |  |  |  |  |  |  |  | P03 |  | 05U |  |  |
| EM05API200 |  | 05A Equipment Location Plans | 42d | 2006-02-27 A | 2006-08-25 A | EK050PI013, PK05AMF33 FF+10d, PK05AMJV07 FF+10d, PK05AMJV01 FF+10d | 100% |  | 2006-02-27 | 2006-04-28 |  |  |  |  | EBWK 5 Day MEC Holidays | 2006-07-29 | 132 | 0 | 0 | 02A | PI132 | 05 | EM | P20 | 05A | PI | P | E | 36 | 25 | E4B4 |  |  |  |  |  |  |  |  | P18 |  |  |  |  |
| EM05UPI176 |  | 05U IDP - Plant Layout | 5d | 2006-03-01 A | 2006-03-03 A | EM05UPI141 | 100% |  | 2006-03-23 | 2006-03-29 |  |  |  |  | EBWK 5 Day MEC Holidays | 2006-07-29 |  | 0 | 0 |  |  | 05 | EM | U20 | 05U | PI | U | E | 4 | 8 | E2B2 |  |  |  |  |  |  |  |  | P05 |  | 05U |  |  |
| EM05UPI186 |  | 05U Planning Release | 5d | 2006-03-03 A | 2006-03-08 A | EM05UPI176 | 100% |  | 2006-03-30 | 2006-04-05 |  |  |  |  | EBWK 5 Day MEC Holidays | 2006-07-29 |  | 0 | 0 |  |  | 05 | EM | U20 | 05U | PI | U | E | 4 | 8 | E5B5 |  |  |  |  | PS |  |  |  | P07 |  | 05U |  |  |
| EM05UPI177 |  | 05U Detail Model Development | 30d | 2006-03-08 A | 2006-03-14 A | EM05UPI186 | 100% |  | 2006-04-06 | 2006-05-22 |  |  |  |  | EBWK 5 Day MEC Holidays | 2006-07-29 |  | 0 | 0 |  |  | 05 | EM | U20 | 05U | PI | U | E | 4 | 8 | E5B5 |  |  |  |  |  |  |  |  | P08 |  | 05U |  |  |
| EM05UPI178 |  | 05U IDP - Detail Design - HDPE Piping (FW) | 5d | 2006-03-14 A | 2006-03-20 A | EM05UPI177, EK050PI013 | 100% |  | 2006-04-24 | 2006-04-28 |  |  |  |  | EBWK 5 Day MEC Holidays | 2006-07-29 |  | 0 | 0 |  |  | 05 | EM | U20 | 05U | PI | U | E | 4 | 8 | E5B5 |  |  |  |  |  |  |  |  | P11 |  | 05U |  |  |
| EM05UPI190 |  | 05U U/G Iso Issue IFC - HDPE Piping (FW) | 5d | 2006-03-27 A | 2006-03-31 A | EM05UPI178 | 100% |  |  |  |  |  |  |  | EBWK 5 Day MEC Holidays | 2006-07-29 |  | 0 | 0 |  |  | 05 | EM | U40 | 05U | PI | U | E | 4 | 8 | E5B5 |  |  |  |  | PS |  |  |  | P13 |  | 05U | 20 | 17 |
| EM05UPI191 |  | 05U U/G Plan Dwgs IFC | 5d | 2006-05-15 A | 2006-08-22 A | EM05UPI178 | 100% |  | 2006-05-15 | 2006-05-19 |  |  |  |  | EBWK 5 Day MEC Holidays | 2006-07-29 |  | 0 | 0 |  |  | 05 | EM | U40 | 05U | PI | U | E | 4 | 8 | E5B5 |  |  |  |  | PS |  |  |  | P13 |  | 05U | 20 | 17 |
| EM05API130 |  | 05A Model Review Mtg | 2d | 2006-06-22 A | 2006-06-22 A | EK020PI011, EM05API120, EM05AEL120 FF | 100% |  | 2006-06-22 | 2006-06-23 |  |  |  |  | EBWK 5 Day MEC Holidays | 2006-07-29 | 130 | 0 | 0 | 05A | PI130 | 05 | EM | P20 | 05A | PI | P | E | 15 | 29 | E5B5 |  |  |  |  |  |  |  |  | P03 |  |  |  |  |
| EM05API133 |  | 05A IDP - Plant Layout | 2d | 2006-08-22 A | 2006-09-08 A | EM05API140 | 100% |  | 2006-08-22 | 2006-08-23 |  |  |  |  | EBWK 5 Day MEC Holidays | 2006-07-29 | 132 | 0 | 0 | 01A | PI132 | 05 | EM | P20 | 05A | PI | P | E | 15 | 29 | E5B5 |  |  |  |  |  |  |  |  | P05 |  |  |  |  |
| EM05API132 |  | 05A Planning Release | 1d | 2006-09-08 A | 2006-09-08 A | EM05ACV120 FF, EM05API130, EK05API050 FF, EM05API133, EK000CV146 | 100% |  | 2006-09-13 | 2006-09-13 |  |  |  |  | EBWK 5 Day MEC Holidays | 2006-07-29 | 132 | 0 | 0 | 05A | PI132 | 05 | EM | P20 | 05A | PI | P | E | 15 | 29 | E5B5 |  |  |  |  | PS |  |  |  | P07 |  |  |  |  |
| EM05API134 |  | 05A Detail Model Development | 30d | 2006-09-11 A | 2006-09-12 A | EM05API132, PK05AMJ154 FF+10d, PK05AMF05 FF+10d, PK05AMF25 FF+10d, PM000MD46N FF+10d, PK000MJ36J FF+10d, PK000MJ36N FF+10d, PK000ML33N FF+10d, EK05AIC300 FF+3d, PK05AMF33 FF+10d, PK05AMB46 FF+10d, PK05AMJV01 FF+10d, PK05AMJV04 FF+10d, PK05AMLV01 FF+10d, PK05AMJV07 FF+10d, PK05AMLV04 FF+10d | 100% |  | 2006-09-14 | 2006-10-25 |  |  |  |  | EBWK 5 Day MEC Holidays | 2006-07-29 | 134 | 0 | 0 | 05A | PI134 | 05 | EM | P50 | 05A | PI | P | E | 15 | 29 | E5B5 |  |  |  |  |  |  |  |  | P08 |  |  |  |  |
| EM05API135 |  | 05A A/G Piping Iso's - Issue IFC | 15d | 2006-09-25 A | 2007-02-02 | EM05AMD229 FF+20d, EK05API144 FF | 67% | 5d | 2006-09-25 | 2006-10-13 | 90d | 0d |  | 2007-02-02 | EBWK 5 Day MEC Holidays | 2006-07-29 | 135 | 0 | 0 | 05A | PI135 | 05 | EM | P50 | 05A | PI | P | E | 15 | 29 | E5B5 |  |  |  |  | PS |  | 96% Complete as of Jan 26th. |  | P13 |  |  | 10 |  |
| EM05API138 |  | 05A Design / Issue Pipe Supports IFC | 45d | 2006-09-25 A | 2007-02-02 | EK000PI051 FF, EM05API132, EM05API135 FF, EM05API134 SS | 89% | 5d | 2006-09-25 | 2006-11-28 | 162d | 0d |  | 2007-02-02 | EBWK 5 Day MEC Holidays | 2006-07-29 | 138 | 0 | 0 | 05A | PI138 | 05 | EM | P60 | 05A | PI | P | E | 15 | 29 | E5B5 |  |  |  |  | PS |  | 96% Complete as of Jan 26th. |  | P14 |  |  | 60 |  |
| EM05API136 |  | 05A IDP - Detail Design | 2d | 2006-10-06 A | 2006-11-27 A | EM05API143 | 100% |  | 2006-10-06 | 2006-10-09 |  |  |  |  | EBWK 5 Day MEC Holidays | 2006-07-29 | 132 | 0 | 0 | 01A | PI132 | 05 | EM | P50 | 05A | PI | P | E | 15 | 29 | E5B5 |  |  |  |  |  |  |  |  | P11 |  |  |  |  |
| EM05BPI120 |  | 05B Plant Layout Model | 20d | 2006-11-27 A | 2006-12-01 A | EK020SY145 FF+10d, EK05BSY170 FF, EK050SY050 FF, EM000PI025 FF, PK05BML100 FF+15d, EK050I1100 FF, EM05BEL120 FF, EK05BPI030 | 100% |  | 2006-11-27 | 2006-12-26 |  |  | start on or after 2006-11-27 |  | EBWK 5 Day MEC Holidays | 2006-07-29 | 120 | 0 | 0 | 05B | PI120 | 05 | EM | P20 | 05B | PI | P | E | 38 | 40 | E5B5 | 30 | 30 | 45 |  |  | 05A |  |  | P02 |  |  |  |  |
| EM05BPI130 |  | 05B Model Review Mtg | 1d | 2006-12-01 A | 2006-12-01 A | EK020PI011, EM05BPI120 FF | 100% |  |  |  |  |  |  |  | EBWK 5 Day MEC Holidays | 2006-07-29 | 130 | 0 | 0 | 05B | PI130 | 05 | EM | P20 | 05B | PI | P | E | 38 | 40 | E5B5 |  |  |  |  |  | 05A |  |  | P03 |  |  |  |  |
| EM05BPI133 |  | 05B IDP - Plant Layout | 2d | 2007-02-12 | 2007-02-13 | EM05BPI141 |  |  |  |  | 75d | 0d |  |  | EBWK 5 Day MEC Holidays | 2006-07-29 | 132 | 0 | 0 | 01A | PI132 | 05 | EM | P20 | 05B | PI | P | E | 38 | 40 | E5B5 | 2 | 2 | 4 |  |  | 05A |  |  | P05 |  |  |  |  |
| EM05BPI132 |  | 05B Planning Release | 5d | 2007-02-19 | 2007-02-23 | EK05BPI050 |  |  |  |  | 75d | 0d |  |  | EBWK 5 Day MEC Holidays | 2006-07-29 | 132 | 0 | 1.1 | 05B | PI132 | 05 | EM | P20 | 05B | PI | P | E | 38 | 40 | E5B5 | 2 | 5 | 10 |  | PS | 05A |  |  | P07 |  |  |  |  |
| EM05BPI200 |  | 05B Equipment Location Plans | 5d | 2007-02-19 | 2007-02-23 | EK050PI013, EM05BPI132 FF |  |  |  |  | 221d | 0d |  |  | EBWK 5 Day MEC Holidays | 2006-07-29 | 132 | 0 | 0 | 02A | PI132 | 05 | EM | P20 | 05B | PI | P | E | 36 | 25 | E4B4 | 10 | 10 | 20 |  |  | 05A |  |  | P18 |  |  |  |  |
| EM05BPI134 |  | 05B Detail Model Development | 10d | 2007-02-26 | 2007-03-02 | EM05BPI132, PK000ML51N FF, EK05BIC300 FF, PK05BMU06 FF, PK05BMLV01 FF |  |  | 2007-02-26 | 2007-03-09 | 75d | 0d |  |  | EBWK 5 Day MEC Holidays | 2006-07-29 | 134 | 0 | 0.1 | 05B | PI134 | 05 | EM | P50 | 05B | PI | P | E | 38 | 40 | E5B5 | 30 | 40 | 60 | 30 | CD | 05A |  |  | P08 |  |  |  |  |
| EM05BPI136 |  | 05B IDP - Detail Design | 2d | 2007-03-09 | 2007-03-12 | EM05BPI143 |  |  |  |  | 75d | 0d |  |  | EBWK 5 Day MEC Holidays | 2006-07-29 | 132 | 0 | 6.2 | 01A | PI132 | 05 | EM | P50 | 05B | PI | P | E | 38 | 40 | E5B5 | 2 | 2 | 5 |  |  | 05A |  |  | P11 |  |  |  |  |
| EM05BPI135 |  | 05B A/G Piping Iso's - Issue IFC | 10d | 2007-03-16 | 2007-03-23 | EK035BI145, EK05BIC120 FF+5d |  |  | 2007-03-16 | 2007-03-29 | 75d | 0d |  |  | EBWK 5 Day MEC Holidays | 2006-07-29 | 135 | 0 | 1.7 | 05B | PI135 | 05 | EM | P50 | 05B | PI | P | E | 38 | 40 | E5B5 | 15 | 20 | 25 | 15 | PS | 05A |  |  | P13 |  |  | 5 |  |
| EM05BPI138 |  | 05B Design / Issue Pipe Supports IFC | 10d | 2007-03-16 | 2007-03-23 | EK000PI051 FF, EM05BPI132, EM05BPI135 FF, EM05BPI134 |  |  | 2007-03-16 | 2007-03-29 | 230d | 83d |  |  | EBWK 5 Day MEC Holidays | 2006-07-29 | 138 | 0 | 0 | 05B | PI138 | 05 | EM | P60 | 05B | PI | P | E | 38 | 40 | E5B5 | 15 | 15 | 25 |  | PS | 05A |  |  | P14 |  |  | 40 | 17 |

| ID | WBS | Activity | Type | Duration | Start | Finish | Predecessors | Complete | Remaining | Planned start | Planned finish | Total float | Free float | Constraint | Expected finish | Calendar | Resources | zData Date | Sequence | PCA Criticality Index | PCA Duration Sensitivity | User Defined Field 1 | User Definer Field 2 | EB02 - UNIT | EB01 - RESP | EB06 - WORK OP | EB03 - AREA | EB05 - DISCIPLINE | EB10 - KEY | EB04 - CLASS | EB11 - FLAG | EB00 - EPC | EB15 - Civil / U/G Path of Construction | EB16 - Piping Path of Construction | EB17 - Suffix | EB21 - Rev 2 Risk Associations | user_integer2 | user_number1 | EB08 - TAG | EB12 - TEMP | EB14 - RISK | EB19 - System | EB09 - IPMS | EB07 - REQN | Optimistic Duration | Most Likely Duration | Pessimistic Duration | EB22 - Critical Actvities | user_integer1 |
| --- | --- | --- | --- | --- | --- | --- | --- | --- | --- | --- | --- | --- | --- | --- | --- | --- | --- | --- | --- | --- | --- | --- | --- | --- | --- | --- | --- | --- | --- | --- | --- | --- | --- | --- | --- | --- | --- | --- | --- | --- | --- | --- | --- | --- | --- | --- | --- | --- | --- |
|  | PR | **Process Engineering** |  |  |  |  |  |  |  |  |  |  |  |  |  |  |  |  |  |  |  |  |  |  |  |  |  |  |  |  |  |  |  |  |  |  |  |  |  |  |  |  |  |  |  |  |  |  |  |
|  | SE | **Safety Engineering** |  |  |  |  |  |  |  |  |  |  |  |  |  |  |  |  |  |  |  |  |  |  |  |  |  |  |  |  |  |  |  |  |  |  |  |  |  |  |  |  |  |  |  |  |  |  |  |
|  | SY | **Systems Engineering** |  |  | 2006-08-16 | 2007-01-31 |  |  |  |  |  |  |  |  |  |  |  |  |  |  |  |  |  |  |  |  |  |  |  |  |  |  |  |  |  |  |  |  |  |  |  |  |  |  |  |  |  |  |  |
| EM5ASY172 |  | 05A P&IDs & Line List Issue - IFD | milestone | 0d | 2006-08-16 A | 2006-08-16 A | EK05ASY170 FF, EK000CS027 FF | 100% |  |  |  |  |  |  |  |  |  | 2006-07-29 | 172 | 0 | 0 | 05A | SY172 | 05 | EM | YP0 | 05A | SY | Y3 | Y | PS | E | 15 | 29 | E5B5 |  |  |  |  |  |  |  |  |  |  |  |  |  |  |
| EM05BSY172 |  | 05B P&IDs & Line List Issue - IFD |  | 11d | 2006-11-27 A | 2006-12-15 A | EK05BSY170 FF, EK000CS027 FF, EK05BPI035 | 100% |  | 2006-11-27 | 2006-12-11 |  |  |  |  |  |  | 2006-07-29 | 172 | 0 | 0 | 05B | SY172 | 05 | EM | YP0 | 05B | SY | Y3 | Y | PS | E | 38 | 40 | E5B5 | 05A |  |  |  |  |  |  |  |  |  |  |  |  |  |
| EM5ASY272 |  | 05A P&IDs & Line List Issue - IFC | milestone | 0d | 2007-01-31 | 2007-01-31 | EM5ASY172 FF |  |  |  |  | 164d | 2d | finish on or after 2007-01-31 |  |  |  | 2006-07-29 | 172 | 0 | 0 | 05A | SY172 | 05 | EM | YP0 | 05A | SY | Y4 | Y | PS | E | 15 | 29 | E5B5 |  |  |  |  |  |  |  |  |  |  |  |  |  |  |
| EM5BSY272 |  | 05B P&IDs & Line List Issue - IFC | milestone | 0d | 2007-01-31 | 2007-01-31 | EM05BSY172 |  |  |  |  | 267d | 120d | finish on or after 2007-01-31 |  |  |  | 2006-07-29 | 172 | 0 | 0 | 05B | SY172 | 05 | EM | YP0 | 05B | SY | Y4 | Y | PS | E | 38 | 40 | E5B5 | 05A |  |  |  |  |  |  |  |  |  |  |  |  |  |
|  | E3B3 | **Construction** |  |  | 2005-02-28 | 2009-04-14 |  |  |  |  |  |  |  |  |  |  |  |  |  |  |  |  |  |  |  |  |  |  |  |  |  |  |  |  |  |  |  |  |  |  |  |  |  |  |  |  |  |  |  |
| CO01GA0115 |  | 01G Erect Control Building (Columns & Parapet Only) |  | 188d | 2006-05-03 A | 2006-07-27 A | CO01GC0150, CO000GE105 | 100% |  | 2006-05-03 | 2006-12-28 |  |  |  |  | EBWK 6 Day Egypt Holidays | Architectural - Construction | 2006-07-29 | 130 | 0 | 0 | 01G | E0130 | 01 | CO | 1A1 | 01G | A0 |  | A | C | C |  |  |  |  | 192 | 0 | 2601K | L1 | 02 |  |  |  |  |  |  |  |  |
|  | P01 | **Procurement OCI** |  |  | 2005-12-31 | 2007-07-12 |  |  |  |  |  |  |  |  |  |  |  |  |  |  |  |  |  |  |  |  |  |  |  |  |  |  |  |  |  |  |  |  |  |  |  |  |  |  |  |  |  |  |  |
| CK01UU4150 |  | 01U U/G Pipe Spool Fabrication & Delivery (FW) HDPE |  | 80d | 2006-04-24 A | 2007-02-15 | EM01UPIFWG FS+15d | 78% | 18d | 2006-05-13 | 2006-08-13 | 164d | 0d |  | 2007-02-15 | EBWK 6 Day Egypt Holidays | U/G Piping - Construction | 2006-07-29 | 110 | 0 | 0 | 01D | U4110 | 01 | CK | 1U1 | 01U | U4 |  | U | PS | C |  |  |  |  |  |  |  |  |  | FW |  |  |  |  |  |  |  |
| CK02UU4150 |  | 02U U/G Pipe Spool Fabrication & Delivery (FW) HDPE |  | 80d | 2006-04-24 A | 2007-02-15 | EM02UPIFWG FS+15d | 78% | 18d | 2006-05-15 | 2006-08-15 | 164d | 0d |  | 2007-02-15 | EBWK 6 Day Egypt Holidays | U/G Piping - Construction | 2006-07-29 | 110 | 0 | 0 | 01D | U4110 | 02 | CK | 1U1 | 02U | U4 |  | U | PS | C |  |  |  |  |  |  |  |  |  | FW |  |  |  |  |  |  |  |
| CK03UU4150 |  | 03U U/G Pipe Spool Fabrication & Delivery (FW) HDPE |  | 80d | 2006-04-24 A | 2007-02-15 | EM03UPIFWG FS+15d | 78% | 18d | 2006-05-13 | 2006-08-13 | 164d | 0d |  | 2007-02-15 | EBWK 6 Day Egypt Holidays | U/G Piping - Construction | 2006-07-29 | 110 | 0 | 0 | 01D | U4110 | 03 | CK | 1U1 | 03U | U4 |  | U | PS | C |  |  |  |  |  |  |  |  |  | FW |  |  |  |  |  |  |  |
| CK05UU4150 |  | 05U U/G Pipe Spool Fabrication & Delivery (FW) HDPE |  | 80d | 2006-04-24 A | 2007-02-15 | EM05UPI190 | 78% | 18d | 2006-05-15 | 2006-08-15 | 318d | 0d |  | 2007-02-15 | EBWK 6 Day Egypt Holidays | U/G Piping - Construction | 2006-07-29 | 110 | 0 | 0 | 01D | U4110 | 05 | CK | 1U1 | 05U | U4 |  | U | PS | C |  |  |  |  |  |  |  |  |  | FW |  |  |  |  |  |  |  |
|  | 00 | **Common** |  |  | 2005-12-31 | 2007-07-12 |  |  |  |  |  |  |  |  |  |  |  |  |  |  |  |  |  |  |  |  |  |  |  |  |  |  |  |  |  |  |  |  |  |  |  |  |  |  |  |  |  |  |  |
| PO000C0045 |  | Purch/Fab/Deliver - Fencing Materials |  | 10d | 2005-12-31 A | 2006-01-14 A | EK000CK005 | 100% |  |  |  |  |  |  |  | EBWK 6 Day Egypt Holidays |  | 2006-07-29 |  | 0 | 0 |  |  | 00 | PO | C00 | 000 | C0 |  | C |  | P |  |  |  |  |  |  |  |  |  |  | H |  |  |  |  |  |  |
| PO000C0050 |  | Receive at Site - Fencing Materials | milestone | 0d | 2006-01-14 A | 2006-01-14 A | PO000C0045 FF+48d, EM000CV164 | 100% |  | 2006-03-11 | 2006-03-11 |  |  |  |  | EBWK 6 Day Egypt Holidays |  | 2006-07-29 |  | 0 | 0 |  |  | 00 | PO | C00 | 000 | C0 |  | C |  | P |  |  |  |  |  |  |  |  |  |  | L |  |  |  |  |  |  |
| PO000V1000 |  | Purch/Fab/Delv - Painting Materials |  | 120d | 2006-07-01 A | 2006-09-26 A | EK000CV070 FS+60d, EK000CK005, EK000YA000 | 100% |  | 2006-07-01 | 2006-12-07 |  |  |  |  | EBWK 6 Day Egypt Holidays |  | 2006-07-29 |  | 0 | 0 |  |  | 00 | PO | V10 | 000 | V1 |  | V |  | P |  |  |  |  | 100 |  |  |  | 16 |  | H |  |  |  |  |  |  |
| PO02ES0120 |  | 02E Fab & Ship Structural Steel |  | 120d | 2006-07-01 A | 2007-05-16 | EM02ECV122 | 21% | 95d | 2006-07-01 | 2006-12-07 | 127d | 0d |  | 2007-05-16 | EBWK 6 Day Egypt Holidays |  | 2006-07-29 | 120 | 0 | 0 | 02E | S0120 | 02 | PO | 1S1 | 02E | S0 |  | S |  | P |  |  |  |  | 100 |  |  |  | 16 |  | F | B1040 |  |  |  |  |  |
| PO02JS0120 |  | 02J Fab & Ship Structural Steel |  | 120d | 2006-07-01 A | 2007-05-16 | EM02JCV122 | 21% | 95d | 2006-07-01 | 2006-12-07 | 98d | 0d |  | 2007-05-16 | EBWK 6 Day Egypt Holidays |  | 2006-07-29 | 120 | 0 | 0 | 02J | S0120 | 02 | PO | 1S1 | 02J | S0 |  | S |  | P |  |  |  |  | 100 |  |  |  | 16 |  | F | B1040 |  |  |  |  |  |
| PO02DS0120 |  | 02D Fab & Ship Structural Steel |  | 120d | 2006-07-11 A | 2007-05-02 | EM02DCV122 | 31% | 83d | 2006-07-11 | 2006-12-18 | 93d | 0d |  | 2007-05-02 | EBWK 6 Day Egypt Holidays |  | 2006-07-29 | 120 | 0 | 0 | 02D | S0120 | 02 | PO | 1S1 | 02D | S0 |  | S |  | P |  |  |  |  | 100 |  |  |  | 16 |  | F | B1040 |  |  |  |  |  |
| PO02YS0120 |  | 02Y Fab & Ship Structural Steel |  | 120d | 2006-07-24 A | 2007-04-04 | EM02YCV122, EM02YCV123 | 51% | 59d | 2006-07-29 | 2007-01-11 | -22d | 0d |  | 2007-04-04 | EBWK 6 Day Egypt Holidays |  | 2006-07-29 | 120 | 29.5 | 5.2 | 02Y | S0120 | 02 | PO | 1S1 | 02Y | S0 |  | S |  | P |  |  |  |  | 100 |  |  | 2Y | 16 |  | F | B1040 | 110 | 120 | 125 | C3 |  |
| PO01YS0120 |  | 01Y Fab & Ship Structural Steel |  | 120d | 2006-07-24 A | 2007-02-28 | EM01YCV122 | 76% | 29d | 2006-07-24 | 2007-01-07 | 39d | 0d |  | 2007-02-28 | EBWK 6 Day Egypt Holidays |  | 2006-07-29 | 120 | 0 | 0 | 01Y | S0120 | 01 | PO | 1S1 | 01Y | S0 |  | S |  | P |  |  |  |  | 100 |  |  |  | 16 |  | F | B1040 |  |  |  |  |  |
| PO02AS0120 |  | 02A Fab & Ship Structural Steel |  | 120d | 2006-07-27 A | 2007-05-09 | EM02ACV122 | 26% | 89d | 2006-07-27 | 2007-01-10 | 103d | 0d |  | 2007-05-09 | EBWK 6 Day Egypt Holidays |  | 2006-07-29 | 120 | 0 | 0 | 02A | S0120 | 02 | PO | 1S1 | 02A | S0 |  | S |  | P |  |  |  |  | 100 |  |  |  | 16 |  | F | B1040 |  |  |  |  |  |
| PO02MS0120 |  | 02M Fab & Ship Structural Steel |  | 120d | 2006-08-01 A | 2007-04-18 | EM02MCV122 | 41% | 71d | 2006-08-01 | 2007-01-15 | 123d | 0d |  | 2007-04-18 | EBWK 6 Day Egypt Holidays |  | 2006-07-29 | 120 | 0 | 0 | 02M | S0120 | 02 | PO | 1S1 | 02M | S0 |  | S |  | P |  |  |  |  | 100 |  |  |  | 16 |  | F | B1040 |  |  |  |  |  |
| PO02HS0120 |  | 02H Fab & Ship Structural Steel |  | 120d | 2006-08-09 A | 2007-04-25 | EM02HCV122 | 36% | 77d | 2006-08-09 | 2007-01-23 | 92d | 0d |  | 2007-04-25 | EBWK 6 Day Egypt Holidays |  | 2006-07-29 | 120 | 0 | 0 | 02H | S0120 | 02 | PO | 1S1 | 02H | S0 |  | S |  | P |  |  |  |  | 100 |  |  |  | 16 |  | F | B1040 |  |  |  |  |  |
| PO02MS0130 |  | 02M Fab & Ship Miscellaneous Steel |  | 120d | 2006-08-22 A | 2007-04-18 | EM02MCV127 | 41% | 71d | 2006-10-04 | 2007-03-14 | 147d | 0d |  | 2007-04-18 | EBWK 6 Day Egypt Holidays |  | 2006-07-29 | 130 | 0 | 0 | 02M | S0130 | 02 | PO | 1S2 | 02M | S0 |  | S |  | P |  |  |  |  | 100 |  |  |  | 16 |  | F | B1040 |  |  |  |  |  |
| PO02DS0130 |  | 02D Fab & Ship Miscellaneous Steel |  | 120d | 2006-08-25 A | 2007-05-02 | EM02DCV127 | 31% | 83d | 2006-10-07 | 2007-03-15 | 105d | 0d |  | 2007-05-02 | EBWK 6 Day Egypt Holidays |  | 2006-07-29 | 130 | 0 | 0 | 02D | S0130 | 02 | PO | 1S2 | 02D | S0 |  | S |  | P |  |  |  |  | 100 |  |  |  | 16 |  | F | B1040 |  |  |  |  |  |
| PO02LS0120 |  | 02L Fab & Ship Structural Steel |  | 120d | 2006-08-26 A | 2007-04-04 | EM02LCV122 | 51% | 59d | 2006-08-26 | 2007-02-08 | -15d | 0d |  | 2007-04-04 | EBWK 6 Day Egypt Holidays |  | 2006-07-29 | 120 | 3.4 | 0 |  |  | 02 | PO | 1S1 | 02L | S0 |  | S |  | P |  |  |  |  | 100 |  |  |  | 16 |  | F | B1040 |  |  |  |  |  |
| PO03CS0130 |  | 03C Fab & Ship Miscellaneous Steel |  | 120d | 2006-09-05 A | 2007-05-16 | EM03CCV127 | 21% | 95d | 2006-10-14 | 2007-03-19 | 87d | 0d |  | 2007-05-16 | EBWK 6 Day Egypt Holidays |  | 2006-07-29 | 130 | 0 | 0 | 03C | S0130 | 03 | PO | 1S2 | 03C | S0 |  | S |  | P |  |  |  |  | 100 |  |  |  | 16 |  | F | B1040 |  |  |  |  |  |
| PO02AS0130 |  | 02A Fab & Ship Miscellaneous Steel |  | 120d | 2006-09-09 A | 2007-05-09 | EM02ACV127 | 26% | 89d | 2006-10-28 | 2007-03-22 | 115d | 0d |  | 2007-05-09 | EBWK 6 Day Egypt Holidays |  | 2006-07-29 | 130 | 0 | 0 | 02A | S0130 | 02 | PO | 1S2 | 02A | S0 |  | S |  | P |  |  |  |  | 100 |  |  |  | 16 |  | F | B1040 |  |  |  |  |  |
| PO02ES0130 |  | 02E Fab & Ship Miscellaneous Steel |  | 120d | 2006-09-16 A | 2007-05-16 | EM02ECV127 | 21% | 95d | 2006-10-28 | 2007-03-22 | 67d | 0d |  | 2007-05-16 | EBWK 6 Day Egypt Holidays |  | 2006-07-29 | 130 | 0 | 0 | 02E | S0130 | 02 | PO | 1S2 | 02E | S0 |  | S |  | P |  |  |  |  | 100 |  |  |  | 16 |  | F | B1040 |  |  |  |  |  |
| PO000P0015 |  | Purch/Fab/Delv - Temporary Testing Materials |  | 120d | 2006-09-26 A | 2006-10-31 A | EK000CV070 FS+60d, EK000CK005, EK000YA000 FS+40d | 100% |  | 2006-09-23 | 2007-03-08 |  |  |  |  | EBWK 6 Day Egypt Holidays |  | 2006-07-29 |  | 0 | 0 |  |  | 00 | PO | P00 | 000 | P0 |  | P |  | P |  |  |  |  | 100 |  |  |  | 16 |  | H |  |  |  |  |  |  |
| PO000V1005 |  | Receive at Site - Painting Materials | milestone | 0d | 2006-09-26 A | 2006-09-26 A | PO000V1000, CK000YA306 | 100% |  | 2006-09-23 | 2006-09-23 |  |  |  |  | EBWK 6 Day Egypt Holidays |  | 2006-07-29 |  | 0 | 0 |  |  | 00 | PO | V10 | 000 | V1 |  | V |  | P |  |  |  |  | 0 |  |  |  |  |  | L |  |  |  |  |  |  |
| PO01DS0120 |  | 01D Fab & Ship Structural Steel |  | 120d | 2006-09-28 A | 2007-03-21 | EM01DCV122 | 61% | 47d | 2006-10-28 | 2007-03-22 | 94d | 0d |  | 2007-03-21 | EBWK 6 Day Egypt Holidays |  | 2006-07-29 | 120 | 0 | 0 | 01D | S0120 | 01 | PO | 1S1 | 01D | S0 |  | S |  | P |  |  |  |  | 100 |  |  |  | 16 |  | F | B1040 |  |  |  |  |  |
| PO02LS0130 |  | 02L Fab & Ship Miscellaneous Steel |  | 120d | 2006-09-28 A | 2007-04-04 | EM02LCV127 | 51% | 59d | 2006-11-29 | 2007-04-24 | 93d | 0d |  | 2007-04-04 | EBWK 6 Day Egypt Holidays |  | 2006-07-29 | 130 | 1 | 1 |  |  | 02 | PO | 1S2 | 02L | S0 |  | S | CD | P |  |  |  |  | 100 |  |  |  | 16 |  | F | B1040 | 60 | 80 | 90 |  | 120 |
| PO03DS0130 |  | 03D Fab & Ship Miscellaneous Steel |  | 120d | 2006-10-21 A | 2007-05-16 | EM03DCV127 FS+30d | 21% | 95d | 2006-12-02 | 2007-04-26 | 98d | 0d |  | 2007-05-16 | EBWK 6 Day Egypt Holidays |  | 2006-07-29 | 130 | 0 | 0 | 03D | S0130 | 03 | PO | 1S2 | 03D | S0 |  | S |  | P |  |  |  |  | 100 |  |  |  | 16 |  | F | B1040 |  |  |  |  |  |
| PO02JS0130 |  | 02J Fab & Ship Miscellaneous Steel |  | 120d | 2006-10-28 A | 2007-05-16 | EM02JCV127 | 21% | 95d | 2006-12-09 | 2007-05-03 | 110d | 0d |  | 2007-05-16 | EBWK 6 Day Egypt Holidays |  | 2006-07-29 | 130 | 0 | 0 | 02J | S0130 | 02 | PO | 1S2 | 02J | S0 |  | S |  | P |  |  |  |  | 100 |  |  |  | 16 |  | F | B1040 |  |  |  |  |  |
| PO000P0020 |  | Receive at Site - Temporary Testing Materials | milestone | 0d | 2006-10-31 A | 2006-10-31 A | PO000P0015, CK000YA306 | 100% |  | 2006-11-30 | 2006-11-30 |  |  |  |  | EBWK 6 Day Egypt Holidays |  | 2006-07-29 |  | 0 | 0 |  |  | 00 | PO | P00 | 000 | P0 |  | P |  | P |  |  |  |  | 0 |  |  |  |  |  | L |  |  |  |  |  |  |
| PO020EL155 |  | 020 Issue E&I Cable/Bulks/JB Reqn (OCI) |  | 15d | 2006-11-01 A | 2006-11-30 A | EK000GE170, EM020ELEH2 SS+20d, EK020EL200 | 100% |  | 2006-11-27 | 2006-12-15 |  |  | start on or after 2006-11-24 |  |  |  | 2006-07-29 |  | 5.3 | 0.7 |  |  | 02 | PO | 1E0 | 020 | EL | UE | E |  | P |  |  |  |  |  |  |  |  |  |  |  |  | 10 | 15 | 20 |  |  |
| PO01DS0130 |  | 01D Fab & Ship Miscellaneous Steel |  | 120d | 2006-11-02 A | 2007-03-21 | EM01DCV127 | 61% | 47d | 2007-01-06 | 2007-05-24 | 94d | 0d |  | 2007-03-21 | EBWK 6 Day Egypt Holidays |  | 2006-07-29 | 130 | 0 | 0 | 01D | S0130 | 01 | PO | 1S2 | 01D | S0 |  | S | CD | P |  |  |  |  | 100 |  |  |  | 16 |  | F | B1040 | 60 | 80 | 90 |  | 120 |
| PO01BS0130 |  | 01B Fab & Ship Miscellaneous Steel |  | 120d | 2006-11-03 A | 2007-03-28 | EM01BCV127 | 56% | 53d | 2007-01-06 | 2007-05-24 | 86d | 0d |  | 2007-03-28 | EBWK 6 Day Egypt Holidays |  | 2006-07-29 | 130 | 0 | 0 | 01B | S0130 | 01 | PO | 1S2 | 01B | S0 |  | S |  | P |  |  |  |  | 100 |  |  |  | 16 |  | F | B1040 |  |  |  |  |  |
| PO03YS0120 |  | 03Y Fab & Ship Structural Steel |  | 120d | 2006-11-04 A | 2007-02-28 | EM03YCV122 | 76% | 29d | 2006-11-04 | 2007-03-29 | 39d | 0d |  | 2007-02-28 | EBWK 6 Day Egypt Holidays |  | 2006-07-29 | 120 | 0 | 0 | 03Y | S0120 | 03 | PO | 1S1 | 03Y | S0 |  | S |  | P |  |  |  |  | 100 |  |  |  | 16 |  | F | B1040 |  |  |  |  |  |
| PO03BS0130 |  | 03B Fab & Ship Miscellaneous Steel |  | 120d | 2006-11-11 A | 2007-05-09 | EM03BCV127 FS+30d | 26% | 89d | 2006-12-23 | 2007-05-17 | 169d | 0d |  | 2007-05-09 | EBWK 6 Day Egypt Holidays |  | 2006-07-29 | 130 | 0 | 0 | 03B | S0130 | 03 | PO | 1S2 | 03B | S0 |  | S |  | P |  |  |  |  | 100 |  |  |  | 16 |  | F | B1040 |  |  |  |  |  |
| PO02NMS100 |  | 02N Fab & Ship Miscellaneous Steel |  | 120d | 2006-11-16 A | 2007-05-30 | CO000K0100 | 11% | 107d | 2006-10-04 | 2007-03-14 | 67d | 0d |  | 2007-05-30 | EBWK 6 Day Egypt Holidays |  | 2006-07-29 | 130 | 0 | 0 | 02M | S0130 | 02 | PO | 1S2 | 02N | S0 |  | S |  | P |  |  |  |  | 100 |  |  |  | 16 |  | F | B1040 |  |  |  |  |  |
| PO02QMS100 |  | 02Q Fab & Ship Miscellaneous Steel |  | 120d | 2006-11-16 A | 2007-05-23 | CO000K0100 | 16% | 101d | 2006-10-04 | 2007-03-14 | 121d | 0d |  | 2007-05-23 | EBWK 6 Day Egypt Holidays |  | 2006-07-29 | 130 | 0 | 0 | 02M | S0130 | 02 | PO | 1S2 | 02Q | S0 |  | S |  | P |  |  |  |  | 100 |  |  |  | 16 |  | F | B1040 |  |  |  |  |  |
| PO03AS0130 |  | 03A Fab & Ship Miscellaneous Steel |  | 120d | 2006-11-22 A | 2007-05-16 | EM03ACV127 FS+20d | 21% | 95d | 2007-01-06 | 2007-05-24 | 56d | 0d |  | 2007-05-16 | EBWK 6 Day Egypt Holidays |  | 2006-07-29 | 130 | 0 | 0 | 03A | S0130 | 03 | PO | 1S2 | 03A | S0 |  | S |  | P |  |  |  |  | 100 |  |  |  | 16 |  | F | B1040 |  |  |  |  |  |
| PO02KS0130 |  | 02K Fab & Ship Miscellaneous Steel |  | 120d | 2006-11-23 A | 2007-05-09 | EM02KCV127 FS+30d | 66% | 41d | 2007-01-20 | 2007-06-07 | 120d | 0d |  | 2007-05-09 | EBWK 6 Day Egypt Holidays |  | 2006-07-29 | 130 | 0 | 0 | 02K | S0130 | 02 | PO | 1S2 | 02K | S0 |  | S |  | P |  |  |  |  | 100 |  |  |  | 16 |  | F | B1040 |  |  |  |  |  |
| PO02CS0130 |  | 02C Fab & Ship Miscellaneous Steel |  | 120d | 2006-12-09 A | 2007-04-25 | EM02CCV127 FS+30d | 36% | 77d | 2007-02-28 | 2007-07-17 | 83d | 0d | finish on or after 2007-05-31 | 2007-04-25 | EBWK 6 Day Egypt Holidays |  | 2006-07-29 | 130 | 0 | 0 | 02C | S0130 | 02 | PO | 1S2 | 02C | S0 |  | S | CD | P |  |  |  |  | 100 |  |  |  | 16 |  | F | B1040 | 60 | 80 | 90 |  | 120 |
| PO02FS0130 |  | 02F Fab & Ship Miscellaneous Steel |  | 120d | 2006-12-09 A | 2007-05-16 | EM02FCV127 FS+30d | 21% | 95d | 2007-02-11 | 2007-06-30 | 133d | 0d |  | 2007-05-16 | EBWK 6 Day Egypt Holidays |  | 2006-07-29 | 130 | 0 | 0 | 02F | S0130 | 02 | PO | 1S2 | 02F | S0 |  | S |  | P |  |  |  |  | 100 |  |  |  | 16 |  | F | B1040 |  |  |  |  |  |
| PO01CS0130 |  | 01C Fab & Ship Miscellaneous Steel |  | 120d | 2006-12-14 A | 2007-05-09 | EM01CPI136 FS+35d, EM01CPI132 FS+30d | 31% | 83d | 2007-02-03 | 2007-06-21 | 106d | 0d | finish on or after 2007-04-30 | 2007-05-09 | EBWK 6 Day Egypt Holidays |  | 2006-07-29 | 130 | 0 | 0 | 01C | S0130 | 01 | PO | 1S2 | 01C | S0 |  | S |  | P |  |  |  |  | 100 |  |  |  | 16 |  | F | B1040 |  |  |  |  |  |
| PO02HS0130 |  | 02H Fab & Ship Miscellaneous Steel |  | 120d | 2006-12-16 A | 2007-04-25 | EM02HCV127 FS+30d | 36% | 77d | 2007-01-27 | 2007-06-14 | 78d | 0d |  | 2007-04-25 | EBWK 6 Day Egypt Holidays |  | 2006-07-29 | 130 | 0 | 0 | 02H | S0130 | 02 | PO | 1S2 | 02H | S0 |  | S |  | P |  |  |  |  | 100 |  |  |  | 16 |  | F | B1040 |  |  |  |  |  |
| PO03ES0130 |  | 03E Fab & Ship Miscellaneous Steel |  | 120d | 2006-12-16 A | 2007-05-16 | EM03ECV127 FS+30d | 21% | 95d | 2007-02-28 | 2007-07-17 | 58d | 0d |  | 2007-05-16 | EBWK 6 Day Egypt Holidays |  | 2006-07-29 | 130 | 7.5 | 3 | 03E | S0130 | 03 | PO | 1S2 | 03E | S0 |  | S | CD | P |  |  |  |  | 100 |  |  |  | 16 |  | F | B1040 | 60 | 80 | 90 |  | 120 |
| PO03FS0130 |  | 03F Fab & Ship Miscellaneous Steel |  | 120d | 2006-12-21 A | 2007-05-09 | EM03FCV127 FS+30d | 30% | 84d | 2007-02-01 | 2007-06-20 | 88d | 0d |  | 2007-05-09 | EBWK 6 Day Egypt Holidays |  | 2006-07-29 | 130 | 0 | 0 | PO200 | S0130 | 03 | PO | 1S2 | 03F | S0 |  | S |  | P |  |  |  |  | 100 |  |  |  | 16 |  | F | B1040 |  |  |  |  |  |
| P002YS0010 |  | 02Y Recv at Site - Structural Steel (First Shipment) | milestone | 0d | 2006-12-27 A | 2006-12-27 A | CK000YA306, PO02YS0120 SF | 100% |  | 2007-01-06 | 2007-01-06 |  |  |  |  | EBWK 6 Day Egypt Holidays |  | 2006-07-29 | 000 | 29.5 | 0 | 02Y | S0000 | 02 | PO | 1S1 | 02Y | S0 |  | S | C | P |  |  |  |  | 0 |  |  | 2Y |  |  | L | B1040 |  |  |  | C3 |  |
| PO02GS0130 |  | 02G Fab & Ship Miscellaneous Steel |  | 120d | 2007-01-16 A | 2007-04-25 | EM02GCV127 | 41% | 71d | 2007-02-03 | 2007-06-21 | 107d | 0d |  | 2007-04-25 | EBWK 6 Day Egypt Holidays |  | 2006-07-29 | 130 | 12.5 | 7.9 | 02G | S0130 | 02 | PO | 1S2 | 02G | S0 |  | S | CD | P |  |  |  |  | 100 |  |  |  | 16 |  | F | B1040 | 60 | 80 | 90 |  | 120 |
| PO000E0000 |  | Purch/Fab/Deliver - A/G Electrical Bulks (First) |  | 90d | 2007-01-27 | 2007-05-10 | EM000ELEM2 FF+20d, PO020EL155 FF+15d |  |  |  |  | 20d | 0d | start on or after 2007-01-01 |  | EBWK 6 Day Egypt Holidays |  | 2006-07-29 |  | 24.3 | 13.3 |  |  | 00 | PO | 1E0 | 000 | E0 |  | E |  | P |  |  |  | 06 | 100 |  |  |  | 16 |  | H |  | 80 | 90 | 120 |  |  |
| PO000V2000 |  | Purch/Fab/Delv - Insulation Materials |  | 120d | 2007-01-27 | 2007-06-14 | EK000CV070 FS+60d, EK000GE170 |  |  |  |  | 98d | 0d | start on or after 2007-01-01 |  | EBWK 6 Day Egypt Holidays |  | 2006-07-29 |  | 0 | 0 |  |  | 00 | PO | V20 | 000 | V2 |  | V |  | P |  |  |  |  | 100 |  |  |  | 16 |  | H |  |  |  |  |  |  |
| PO01HS0130 |  | 01H Fab & Ship Miscellaneous Steel |  | 120d | 2007-01-27 | 2007-05-09 | EM01HCV127 |  |  | 2007-01-27 | 2007-06-14 | 51d | 0d |  | 2007-05-09 | EBWK 6 Day Egypt Holidays |  | 2006-07-29 | 130 | 0 | 0 | 01H | S0130 | 01 | PO | 1S2 | 01H | S0 |  | S | CD | P |  |  |  |  | 100 |  |  |  | 16 |  | F | B1040 | 60 | 80 | 90 |  | 120 |
| PO05AS0120 |  | 05A Fab & Ship Structural Steel |  | 120d | 2007-02-14 | 2007-07-04 | EM05ACV122 |  |  |  |  | 23d | 0d | finish on or after 2007-07-04 |  | EBWK 6 Day Egypt Holidays |  | 2006-07-29 | 120 | 0 | 0 | 05A | S0120 | 05 | PO | 1S1 | 05A | S0 |  | S |  | P |  |  |  |  | 100 |  |  |  | 16 |  | F | B1040 |  |  |  |  |  |
| PO05AS0130 |  | 05A Fab & Ship Miscellaneous Steel |  | 120d | 2007-02-14 | 2007-07-04 | EM05ACV127 |  |  |  |  | 27d | 0d | finish on or after 2007-07-04 |  | EBWK 6 Day Egypt Holidays |  | 2006-07-29 | 130 | 0 | 0 | 05A | S0130 | 05 | PO | 1S2 | 05A | S0 |  | S |  | P |  |  |  |  | 100 |  |  |  | 16 |  | F | B1040 |  |  |  |  |  |
| PO05BS0130 |  | 05B Fab & Ship Miscellaneous Steel |  | 120d | 2007-02-24 | 2007-07-12 | EM05BCV133, EM05BCV122 |  |  |  |  | 87d | 0d | finish on or after 2007-07-04 |  | EBWK 6 Day Egypt Holidays |  | 2006-07-29 | 130 | 0 | 4.6 | 05B | S0130 | 05 | PO | 1S2 | 05B | S0 |  | S |  | P |  |  |  | 03 | 100 |  |  |  | 16 |  | F | B1040 | 60 | 120 | 140 |  |  |
| PO01YS0000 |  | 01Y Recv at Site - Structural Steel | milestone | 0d | 2007-02-28 | 2007-02-28 | PO01YS0120, CK000YA306 |  |  |  |  | 39d | 0d |  |  | EBWK 6 Day Egypt Holidays |  | 2006-07-29 | 000 | 0 | 0 | 01Y | S0000 | 01 | PO | 1S1 | 01Y | S0 |  | S | C | P |  |  |  |  | 0 |  |  |  |  |  | L | B1040 |  |  |  |  |  |
| PO03YS0000 |  | 03Y Recv at Site - Structural Steel | milestone | 0d | 2007-02-28 | 2007-02-28 | PO03YS0120, CK000YA306 |  |  |  |  | 39d | 0d |  |  | EBWK 6 Day Egypt Holidays |  | 2006-07-29 | 000 | 0 | 0 | 03Y | S0000 | 03 | PO | 1S1 | 03Y | S0 |  | S | C | P |  |  |  |  | 0 |  |  |  |  |  | L | B1040 |  |  |  |  |  |
| PO000EL000 |  | Electrical Heat Tracing - Purchase & Deliver Materials (By OCI) |  | 80d | 2007-03-03 | 2007-06-03 | EK000ELEG0, EK000ELEGP |  |  |  |  | 108d | 21d |  |  | EBWK 6 Day Egypt Holidays |  | 2006-07-29 |  | 0 | 0 |  |  | 00 | PO | 1E0 | 000 | EL |  | E |  | P |  |  | E3B3 |  |  |  |  |  |  |  |  |  |  |  |  |  |  |
| PO01DS0000 |  | 01D Recv at Site - Structural Steel | milestone | 0d | 2007-03-21 | 2007-03-21 | PO01DS0120, CK000YA306 |  |  |  |  | 94d | 33d |  |  | EBWK 6 Day Egypt Holidays |  | 2006-07-29 | 000 | 0 | 0 | 01D | S0000 | 01 | PO | 1S1 | 01D | S0 |  | S | C | P |  |  |  |  | 0 |  |  |  |  |  | L | B1040 |  |  |  |  |  |
| PO01DS0010 |  | 01D Recv at Site - Misc Steel | milestone | 0d | 2007-03-21 | 2007-03-21 | PO01DS0130, CK000YA306 |  |  |  |  | 94d | 33d |  |  | EBWK 6 Day Egypt Holidays |  | 2006-07-29 | 010 | 0 | 0 | 01D | S0010 | 01 | PO | 1S2 | 01D | S0 |  | S | C | P |  |  |  |  | 0 |  |  |  |  |  | L | B1040 |  |  |  |  |  |
| PO01BS0010 |  | 01B Recv at Site - Misc Steel | milestone | 0d | 2007-03-28 | 2007-03-28 | PO01BS0130, CK000YA306 |  |  |  |  | 86d | 0d |  |  | EBWK 6 Day Egypt Holidays |  | 2006-07-29 | 010 | 0 | 0 | 01B | S0010 | 01 | PO | 1S2 | 01B | S0 |  | S | C | P |  |  |  |  | 0 |  |  |  |  |  | L | B1040 |  |  |  |  |  |
| PO02LS0000 |  | 02L Recv at Site - Structural Steel | milestone | 0d | 2007-04-04 | 2007-04-04 | PO02LS0120, CK000YA306 |  |  |  |  | -15d | 0d |  |  | EBWK 6 Day Egypt Holidays |  | 2006-07-29 | 000 | 3.4 | 0 |  |  | 02 | PO | 1S1 | 02L | S0 |  | S | C | P |  |  |  |  | 0 |  |  |  |  |  | L | B1040 |  |  |  |  |  |
| PO02LS0010 |  | 02L Recv at Site - Misc Steel | milestone | 0d | 2007-04-04 | 2007-04-04 | PO02LS0130, CK000YA306 |  |  |  |  | 93d | 54d |  |  | EBWK 6 Day Egypt Holidays |  | 2006-07-29 | 010 | 1 | 0 |  |  | 02 | PO | 1S2 | 02L | S0 |  | S | C | P |  |  |  |  | 0 |  |  |  |  |  | L | B1040 |  |  |  |  |  |

Notes:
- PO02ES0120: P3 Activity Log Info: Early order of / Materials???
- PO02JS0120: P3 Activity Log Info: Early order of / Materials???
- PO02DS0120: P3 Activity Log Info: Early order of / Materials???
- PO02YS0120: P3 Activity Log Info: Early order of / Materials???
- PO01YS0120: P3 Activity Log Info: Early order of / Materials???
- PO02AS0120: P3 Activity Log Info: Early order of / Materials???
- PO02MS0120: P3 Activity Log Info: Early order of / Materials???
- PO02HS0120: P3 Activity Log Info: Early order of / Materials???
- PO02MS0130: P3 Activity Log Info: Early order of / Materials???
- PO02DS0130: P3 Activity Log Info: Early order of / Materials???
- PO02LS0120: P3 Activity Log Info: Early order of / Materials???
- PO03CS0130: P3 Activity Log Info: Early order of / Materials???
- PO02AS0130: P3 Activity Log Info: Early order of / Materials???
- PO02ES0130: P3 Activity Log Info: Early order of / Materials???
- PO01DS0120: P3 Activity Log Info: Early order of / Materials???
- PO02LS0130: P3 Activity Log Info: Early order of / Materials???
- PO03DS0130: P3 Activity Log Info: Early order of / Materials???
- PO02JS0130: P3 Activity Log Info: Early order of / Materials???
- PO020EL155: P3 Activity Log Info: general area /early order/delta req to / follow
- PO01DS0130: P3 Activity Log Info: Early order of / Materials???
- PO01BS0130: P3 Activity Log Info: Early order of / Materials???
- PO03YS0120: P3 Activity Log Info: Early order of / Materials???
- PO03BS0130: P3 Activity Log Info: Early order of / Materials???
- PO02NMS100: P3 Activity Log Info: Early order of / Materials???
- PO02QMS100: P3 Activity Log Info: Early order of / Materials???
- PO03AS0130: P3 Activity Log Info: Early order of / Materials???
- PO02KS0130: P3 Activity Log Info: Early order of / Materials???
- PO02CS0130: P3 Activity Log Info: Early order of / Materials???
- PO02FS0130: P3 Activity Log Info: Early order of / Materials???
- PO01CS0130: P3 Activity Log Info: Early order of / Materials???
- PO02HS0130: P3 Activity Log Info: Early order of / Materials???
- PO03ES0130: P3 Activity Log Info: Early order of / Materials???
- PO03FS0130: P3 Activity Log Info: Early order of / Materials???
- PO02GS0130: P3 Activity Log Info: Early order of / Materials???
- PO01HS0130: P3 Activity Log Info: Early order of / Materials???
- PO05AS0120: P3 Activity Log Info: Early order of / Materials???
- PO05AS0130: P3 Activity Log Info: Early order of / Materials???
- PO05BS0130: P3 Activity Log Info: Early order of / Materials???

| ID | Activity | Type | Duration | Start | Finish | Predecessors | Total float | Free float | Calendar | zData Date | Sequence | PCA Criticality Index | PCA Duration Sensitivity | User Defined Field 1 | User Definer Field 2 | user_integer2 | EB02 - UNIT | EB01 - RESP | EB06 - WORK OP | EB03 - AREA | EB05 - DISCIPLINE | EB07 - REQN | EB04 - CLASS | EB11 - FLAG | EB12 - TEMP | EB09 - IPMS | EB00 - EPC | EB22 - Critical Actvities | user_number1 | EB21 - Rev 2 Risk Associations |
| --- | --- | --- | --- | --- | --- | --- | --- | --- | --- | --- | --- | --- | --- | --- | --- | --- | --- | --- | --- | --- | --- | --- | --- | --- | --- | --- | --- | --- | --- | --- |
| PO02YS0000 | 02Y Recv at Site - Structural Steel (Last Shipment) | milestone | 0d | 2007-04-04 | 2007-04-04 | PO02YS0120, CK000YA306 | -14d | 21d | EBWK 6 Day Egypt Holidays | 2006-07-29 | 000 | 29.5 | 0 | 02Y | S0000 | 0 | 02 | PO | 1S1 | 02Y | S0 | B1040 | S | C | 2Y | L | P | C3 |  |  |
| PO02MS0000 | 02M Recv at Site - Structural Steel | milestone | 0d | 2007-04-18 | 2007-04-18 | PO02MS0120, CK000YA306 | 123d | 0d | EBWK 6 Day Egypt Holidays | 2006-07-29 | 000 | 0 | 0 | 02M | S0000 | 0 | 02 | PO | 1S1 | 02M | S0 | B1040 | S | C |  | L | P |  |  |  |
| PO02MS0010 | 02M Recv at Site - Misc Steel | milestone | 0d | 2007-04-18 | 2007-04-18 | PO02MS0130, CK000YA306 | 147d | 24d | EBWK 6 Day Egypt Holidays | 2006-07-29 | 010 | 0 | 0 | 02M | S0010 | 0 | 02 | PO | 1S2 | 02M | S0 | B1040 | S | C |  | L | P |  |  |  |
| PO02CS0010 | 02C Recv at Site - Misc Steel | milestone | 0d | 2007-04-25 | 2007-04-25 | PO02CS0130, CK000YA306 | 83d | 0d | EBWK 6 Day Egypt Holidays | 2006-07-29 | 010 | 0 | 0 | 02C | S0010 | 0 | 02 | PO | 1S2 | 02C | S0 | B1040 | S | C |  | L | P |  |  |  |
| PO02GS0010 | 02G Recv at Site - Misc Steel | milestone | 0d | 2007-04-25 | 2007-04-25 | PO02GS0130, CK000YA306 | 107d | 0d | EBWK 6 Day Egypt Holidays | 2006-07-29 | 010 | 12.5 | 0 | 02G | S0010 | 0 | 02 | PO | 1S2 | 02G | S0 | B1040 | S | C |  | L | P |  |  |  |
| PO02HS0000 | 02H Recv at Site - Structural Steel | milestone | 0d | 2007-04-25 | 2007-04-25 | PO02HS0120, CK000YA306 | 92d | 82d | EBWK 6 Day Egypt Holidays | 2006-07-29 | 000 | 0 | 0 | 02H | S0000 | 0 | 02 | PO | 1S1 | 02H | S0 | B1040 | S | C |  | L | P |  |  |  |
| PO02HS0010 | 02H Recv at Site - Misc Steel | milestone | 0d | 2007-04-25 | 2007-04-25 | PO02HS0130, CK000YA306 | 78d | 0d | EBWK 6 Day Egypt Holidays | 2006-07-29 | 010 | 0 | 0 | 02H | S0010 | 0 | 02 | PO | 1S2 | 02H | S0 | B1040 | S | C |  | L | P |  |  |  |
| PO02DS0000 | 02D Recv at Site - Structural Steel | milestone | 0d | 2007-05-02 | 2007-05-02 | PO02DS0120, CK000YA306 | 93d | 0d | EBWK 6 Day Egypt Holidays | 2006-07-29 | 000 | 0 | 0 | 02D | S0000 | 0 | 02 | PO | 1S1 | 02D | S0 | B1040 | S | C |  | L | P |  |  |  |
| PO02DS0010 | 02D Recv at Site - Misc Steel | milestone | 0d | 2007-05-02 | 2007-05-02 | PO02DS0130, CK000YA306 | 105d | 12d | EBWK 6 Day Egypt Holidays | 2006-07-29 | 010 | 0 | 0 | 02D | S0010 | 0 | 02 | PO | 1S2 | 02D | S0 | B1040 | S | C |  | L | P |  |  |  |
| PO01CS0010 | 01C Recv at Site - Misc Steel | milestone | 0d | 2007-05-09 | 2007-05-09 | PO01CS0130, CK000YA306 | 106d | 0d | EBWK 6 Day Egypt Holidays | 2006-07-29 | 010 | 0 | 0 | 01C | S0010 | 0 | 01 | PO | 1S2 | 01C | S0 | B1040 | S | C |  | L | P |  |  |  |
| PO01HS0010 | 01H Recv at Site - Misc Steel | milestone | 0d | 2007-05-09 | 2007-05-09 | PO01HS0130, CK000YA306 | 51d | 0d | EBWK 6 Day Egypt Holidays | 2006-07-29 | 010 | 0 | 0 | 01H | S0010 | 0 | 01 | PO | 1S2 | 01H | S0 | B1040 | S | C |  | L | P |  |  |  |
| PO02AS0000 | 02A Recv at Site - Structural Steel | milestone | 0d | 2007-05-09 | 2007-05-09 | PO02AS0120, CK000YA306, CK000YA306 FF | 103d | 0d | EBWK 6 Day Egypt Holidays | 2006-07-29 | 000 | 0 | 0 | 02A | S0000 | 0 | 02 | PO | 1S1 | 02A | S0 | B1040 | S | C |  | L | P |  |  |  |
| PO02AS0010 | 02A Recv at Site - Misc Steel | milestone | 0d | 2007-05-09 | 2007-05-09 | PO02AS0130, CK000YA306 | 115d | 12d | EBWK 6 Day Egypt Holidays | 2006-07-29 | 010 | 0 | 0 | 02A | S0010 | 0 | 02 | PO | 1S2 | 02A | S0 | B1040 | S | C |  | L | P |  |  |  |
| PO02KS0010 | 02K Recv at Site - Misc Steel | milestone | 0d | 2007-05-09 | 2007-05-09 | PO02KS0130, CK000YA306 | 120d | 19d | EBWK 6 Day Egypt Holidays | 2006-07-29 | 010 | 0 | 0 | 02K | S0010 | 0 | 02 | PO | 1S2 | 02K | S0 | B1040 | S | C |  | L | P |  |  |  |
| PO03BS0010 | 03B Recv at Site - Misc Steel | milestone | 0d | 2007-05-09 | 2007-05-09 | PO03BS0130, CK000YA306 | 169d | 0d | EBWK 6 Day Egypt Holidays | 2006-07-29 | 010 | 0 | 0 | 03B | S0010 | 0 | 03 | PO | 1S2 | 03B | S0 | B1040 | S | C |  | L | P |  |  |  |
| PO03FS0010 | 03F Recv at Site - Misc Steel | milestone | 0d | 2007-05-09 | 2007-05-09 | PO03FS0130, CK000YA306 | 88d | 0d | EBWK 6 Day Egypt Holidays | 2006-07-29 | 010 | 0 | 0 | PO200 | S0010 | 0 | 03 | PO | 1S2 | 03F | S0 | B1040 | S | C |  | L | P |  |  |  |
| PO000E0010 | Receive at Site - A/G Electrical Bulks (First) | milestone | 0d | 2007-05-10 | 2007-05-10 | PO000E0000, CK000YA306 | 20d | 0d | EBWK 6 Day Egypt Holidays | 2006-07-29 |  | 24.3 | 0 |  |  | 0 | 00 | PO | 1E0 | 000 | E0 |  | E |  |  | L | C |  | 26 |  |
| PO02ES0000 | 02E Recv at Site - Structural Steel | milestone | 0d | 2007-05-16 | 2007-05-16 | PO02ES0120, CK000YA306, CK000YA306 FF | 127d | 0d | EBWK 6 Day Egypt Holidays | 2006-07-29 | 000 | 0 | 0 | 02E | S0000 | 0 | 02 | PO | 1S1 | 02E | S0 | B1040 | S | C |  | L | P |  |  |  |
| PO02ES0010 | 02E Recv at Site - Misc Steel | milestone | 0d | 2007-05-16 | 2007-05-16 | PO02ES0130, CK000YA306 | 67d | 0d | EBWK 6 Day Egypt Holidays | 2006-07-29 | 010 | 0 | 0 | 02E | S0010 | 0 | 02 | PO | 1S2 | 02E | S0 | B1040 | S | C |  | L | P |  |  |  |
| PO02FS0010 | 02F Recv at Site - Misc Steel | milestone | 0d | 2007-05-16 | 2007-05-16 | PO02FS0130, CK000YA306 | 133d | 0d | EBWK 6 Day Egypt Holidays | 2006-07-29 | 010 | 0 | 0 | 02F | S0010 | 0 | 02 | PO | 1S2 | 02F | S0 | B1040 | S | C |  | L | P |  |  |  |
| PO02JS0000 | 02J Recv at Site - Structural Steel | milestone | 0d | 2007-05-16 | 2007-05-16 | PO02JS0120, CK000YA306, CK000YA306 FF | 98d | 0d | EBWK 6 Day Egypt Holidays | 2006-07-29 | 000 | 0 | 0 | 02J | S0000 | 0 | 02 | PO | 1S1 | 02J | S0 | B1040 | S | C |  | L | P |  |  |  |
| PO02JS0010 | 02J Recv at Site - Misc Steel | milestone | 0d | 2007-05-16 | 2007-05-16 | PO02JS0130, CK000YA306 | 110d | 12d | EBWK 6 Day Egypt Holidays | 2006-07-29 | 010 | 0 | 0 | 02J | S0010 | 0 | 02 | PO | 1S2 | 02J | S0 | B1040 | S | C |  | L | P |  |  |  |
| PO03AS0010 | 03A Recv at Site - Misc Steel | milestone | 0d | 2007-05-16 | 2007-05-16 | PO03AS0130, CK000YA306 | 56d | 0d | EBWK 6 Day Egypt Holidays | 2006-07-29 | 010 | 0 | 0 | 03A | S0010 | 0 | 03 | PO | 1S2 | 03A | S0 | B1040 | S | C |  | L | P |  |  |  |
| PO03CS0010 | 03C Recv at Site - Misc Steel | milestone | 0d | 2007-05-16 | 2007-05-16 | PO03CS0130, CK000YA306 | 87d | 0d | EBWK 6 Day Egypt Holidays | 2006-07-29 | 010 | 0 | 0 | 03C | S0010 | 0 | 03 | PO | 1S2 | 03C | S0 | B1040 | S | C |  | L | P |  |  |  |
| PO03DS0010 | 03D Recv at Site - Misc Steel | milestone | 0d | 2007-05-16 | 2007-05-16 | PO03DS0130, CK000YA306 | 98d | 0d | EBWK 6 Day Egypt Holidays | 2006-07-29 | 010 | 0 | 0 | 03D | S0010 | 0 | 03 | PO | 1S2 | 03D | S0 | B1040 | S | C |  | L | P |  |  |  |
| PO03ES0010 | 03E Recv at Site - Misc Steel | milestone | 0d | 2007-05-16 | 2007-05-16 | PO03ES0130, CK000YA306 | 58d | 0d | EBWK 6 Day Egypt Holidays | 2006-07-29 | 010 | 7.5 | 0 | 03E | S0010 | 0 | 03 | PO | 1S2 | 03E | S0 | B1040 | S | C |  | L | P |  |  |  |
| PO02QMS110 | 02Q Recv at Site - Misc Steel | milestone | 0d | 2007-05-23 | 2007-05-23 | PO02QMS100 | 121d | 20d | EBWK 6 Day Egypt Holidays | 2006-07-29 | 010 | 0 | 0 | 02M | S0010 | 0 | 02 | PO | 1S2 | 02Q | S0 | B1040 | S | C |  | L | P |  |  |  |
| PO02NMS110 | 02N Recv at Site - Misc Steel | milestone | 0d | 2007-05-30 | 2007-05-30 | PO02NMS100 | 67d | 11d | EBWK 6 Day Egypt Holidays | 2006-07-29 | 010 | 0 | 0 | 02M | S0010 | 0 | 02 | PO | 1S2 | 02N | S0 | B1040 | S | C |  | L | P |  |  |  |
| PO000V2005 | Receive at Site - Insulation Materials | milestone | 0d | 2007-06-14 | 2007-06-14 | PO000V2000, CK000YA306 | 98d | 0d | EBWK 6 Day Egypt Holidays | 2006-07-29 |  | 0 | 0 |  |  | 0 | 00 | PO | V20 | 000 | V2 |  | V |  |  | L | P |  |  |  |
| PO05AS0000 | 05A Recv at Site - Structural Steel | milestone | 0d | 2007-07-04 | 2007-07-04 | PO05AS0120, CK000YA306 | 23d | 0d | EBWK 6 Day Egypt Holidays | 2006-07-29 | 000 | 0 | 0 | 05A | S0000 | 0 | 05 | PO | 1S1 | 05A | S0 | B1040 | S | C |  | L | P |  |  |  |
| PO05AS0010 | 05A Recv at Site - Misc Steel | milestone | 0d | 2007-07-04 | 2007-07-04 | PO05AS0130, CK000YA306 | 27d | 4d | EBWK 6 Day Egypt Holidays | 2006-07-29 | 010 | 0 | 0 | 05A | S0010 | 0 | 05 | PO | 1S2 | 05A | S0 | B1040 | S | C |  | L | P |  |  |  |
| PO05BS0010 | 05B Recv at Site - Misc Steel | milestone | 0d | 2007-07-12 | 2007-07-12 | PO05BS0130, CK000YA306 | 87d | 11d | EBWK 6 Day Egypt Holidays | 2006-07-29 | 010 | 0 | 0 | 05B | S0010 | 0 | 05 | PO | 1S2 | 05B | S0 | B1040 | S | C |  | L | P |  |  | 05A |

| ID | WBS | Activity | Type | Duration | Start | Finish | Predecessors | Complete | Remaining | Planned start | Planned finish | Total float | Free float | Constraint | Expected finish | Calendar | Resources | zData Date | Sequence | PCA Criticality Index | PCA Duration Sensitivity | User Defined Field 1 | User Definer Field 2 | user_number1 | EB02 - UNIT | EB01 - RESP | EB06 - WORK OP | EB03 - AREA | EB05 - DISCIPLINE | EB04 - CLASS | EB11 - FLAG | EB00 - EPC | user_integer2 | EB07 - REQN | EB10 - KEY | EB12 - TEMP | EB14 - RISK | Optimistic Duration | Most Likely Duration | Pessimistic Duration | EB21 - Rev 2 Risk Associations |
| --- | --- | --- | --- | --- | --- | --- | --- | --- | --- | --- | --- | --- | --- | --- | --- | --- | --- | --- | --- | --- | --- | --- | --- | --- | --- | --- | --- | --- | --- | --- | --- | --- | --- | --- | --- | --- | --- | --- | --- | --- | --- |
|  | 01 | **Offsites** |  |  | 2006-12-01 | 2007-02-15 |  |  |  |  |  |  |  |  |  |  |  |  |  |  |  |  |  |  |  |  |  |  |  |  |  |  |  |  |  |  |  |  |  |  |  |
| PO01EA0135 |  | 01E Guard House Design Drawings - Submit to KBR |  | 48d | 2006-12-01 A | 2007-02-01 | CO000K0100 | 88% | 6d | 2007-01-20 | 2007-03-15 | 200d | 0d |  | 2007-02-01 | EBWK 6 Day Egypt Holidays | Architectural - Construction | 2006-07-29 | 120 | 0 | 0 | 01E | U4120 | 35 | 01 | PO | 1A1 | 01E | A0 | A | C | P |  |  |  |  |  |  |  |  |  |
| PO01FA0135 |  | 01F Mosque Design Drawings - Submit to KBR |  | 48d | 2006-12-01 A | 2007-02-01 | CO000K0100 | 88% | 6d | 2007-01-20 | 2007-03-15 | 143d | 0d |  | 2007-02-01 | EBWK 6 Day Egypt Holidays | Architectural - Construction | 2006-07-29 | 120 | 0 | 0 | 01E | U4120 | 35 | 01 | PO | 1A1 | 01F | A0 | A | C | P |  |  |  |  |  |  |  |  |  |
| EK01EA0140 |  | 01E Guard House Design Drawings - Approval |  | 7d | 2007-02-02 | 2007-02-15 | PO01EA0135 |  |  | 2007-02-02 | 2007-02-12 | 175d | 0d |  |  |  | Architectural - Construction | 2006-07-29 | 120 | 0 | 0 | 01E | U4120 | 35 | 01 | EK | 1A1 | 01E | AR | A | C | E |  |  |  |  |  |  |  |  |  |
| EK01FA0140 |  | 01F Mosque Design Drawings - Approval |  | 7d | 2007-02-02 | 2007-02-15 | PO01FA0135 |  |  | 2007-02-02 | 2007-02-12 | 119d | 0d |  |  |  | Architectural - Construction | 2006-07-29 | 120 | 0 | 0 | 01E | U4120 | 35 | 01 | EK | 1A1 | 01F | AR | A | C | E |  |  |  |  |  |  |  |  |  |
|  | 02 | **Ammonia Plant** |  |  |  |  |  |  |  |  |  |  |  |  |  |  |  |  |  |  |  |  |  |  |  |  |  |  |  |  |  |  |  |  |  |  |  |  |  |  |  |
|  | 03 | **Utility Plant** |  |  |  |  |  |  |  |  |  |  |  |  |  |  |  |  |  |  |  |  |  |  |  |  |  |  |  |  |  |  |  |  |  |  |  |  |  |  |  |
|  | 04 | **Corridor** |  |  |  |  |  |  |  |  |  |  |  |  |  |  |  |  |  |  |  |  |  |  |  |  |  |  |  |  |  |  |  |  |  |  |  |  |  |  |  |
|  | 05 | **Dock / Storage** |  |  |  |  |  |  |  |  |  |  |  |  |  |  |  |  |  |  |  |  |  |  |  |  |  |  |  |  |  |  |  |  |  |  |  |  |  |  |  |
|  | P02 | **Procurement (Tanks)** |  |  | 2005-08-27 | 2006-10-14 |  |  |  |  |  |  |  |  |  |  |  |  |  |  |  |  |  |  |  |  |  |  |  |  |  |  |  |  |  |  |  |  |  |  |  |
| PO000MF000 |  | Field Erected Tanks Subcontract - Prepare Inquiry, Bid, NTP |  | 35d | 2005-08-27 A | 2006-02-03 A | EK000MF31B, EK000MF32F, EK000MF33F, EK000MF32C | 100% |  | 2005-08-27 | 2005-10-06 |  |  |  |  | EBWK 6 Day Egypt Holidays |  | 2006-07-29 |  | 0 | 0 |  |  |  | 00 | PO | 1M1 | 000 | MF | M |  | C | 65 | MFSUB | T | X | 14 |  |  |  |  |
| PO000MF010 |  | Field Erected Tanks Subcontract - Purchasing & Fabrication |  | 174d | 2006-02-04 A | 2006-10-14 A | PO000MF000, EK000YA000 FF | 100% |  | 2006-03-15 | 2006-10-16 |  |  |  |  | EBWK 6 Day Egypt Holidays |  | 2006-07-29 |  | 0 | 0 |  |  |  | 00 | PO | 1M1 | 000 | MF | MF |  | C | 130 | MFSUB | T | X | 14 |  |  |  |  |
|  | 00 | **Common** |  |  |  |  |  |  |  |  |  |  |  |  |  |  |  |  |  |  |  |  |  |  |  |  |  |  |  |  |  |  |  |  |  |  |  |  |  |  |  |
|  | C00 | **Construction KBR (Pipe Fab)** |  |  | 2006-09-16 | 2007-06-30 |  |  |  |  |  |  |  |  |  |  |  |  |  |  |  |  |  |  |  |  |  |  |  |  |  |  |  |  |  |  |  |  |  |  |  |
|  | 00 | **Common** |  |  | 2006-09-16 | 2007-06-30 |  |  |  |  |  |  |  |  |  |  |  |  |  |  |  |  |  |  |  |  |  |  |  |  |  |  |  |  |  |  |  |  |  |  |  |
| CK000P0110 |  | 000 Pipe Fabrication | level of effort | 149d | 2006-09-16 A | 2007-06-30 | CK000U4110 SS | 11% | 133d | 2006-09-16 | 2007-04-04 | 49d | 0d |  |  | EBWK 6 Day Egypt Holidays |  | 2006-07-29 | 110 | 0 | 0 | 01Y | P0110 |  | 00 | CK | 1P1 | 000 | P0 | P | WE | C |  |  |  |  |  |  |  |  |  |
|  | P0 | **A/G Piping** |  |  | 2006-11-04 | 2007-06-30 |  |  |  |  |  |  |  |  |  |  |  |  |  |  |  |  |  |  |  |  |  |  |  |  |  |  |  |  |  |  |  |  |  |  |  |
| CK02YP0110 |  | 02Y A/G Pipe Spool Fabrication |  | 48d | 2006-11-04 A | 2007-02-28 | CK000U4110, EM02YPI135 FF+60d, EM02YPI135 SS+60d | 40% | 29d | 2006-11-11 | 2007-01-11 | 27d | 0d |  | 2007-02-28 | EBWK 6 Day Egypt Holidays |  | 2006-07-29 | 110 | 0 | 0 | 02Y | P0110 | 16.00208333 | 02 | CK | 1P1 | 02Y | P0 | P | PS | C |  |  |  | 2Y |  |  |  |  |  |
| WK000P0100 |  | 000 A/G Pipe Spool Fabrication | WBS summary | 193d | 2006-11-04 A | 2007-06-30 | CK000U4110, EK000YA500 FF | 31% | 133d | 2006-11-11 | 2007-06-30 | 49d | 537d |  |  | EBWK 6 Day Egypt Holidays | Aboveground Pipe - Construction [139236 h] | 2006-07-29 | 120 | 0 | 0 | 01D | P0120 |  | 00 | CK | 1P1 | 000 | P0 | P | WC | C |  |  |  |  |  |  |  |  |  |
| CK02FP0110 |  | 02F A/G Pipe Spool Fabrication |  | 16d | 2006-11-10 A | 2007-05-20 | CK000U4110, EM02FPI135 FS+30d |  | 98d | 2006-12-06 | 2006-12-24 | 84d | 0d |  | 2007-05-20 | EBWK 6 Day Egypt Holidays |  | 2006-07-29 | 110 | 0 | 0 | 02F | P0110 | 10 | 02 | CK | 1P1 | 02F | P0 | P | PS | C |  |  |  |  |  |  |  |  |  |
| CK02NP0110 |  | 02N A/G Pipe Spool Fabrication |  | 3d | 2006-11-11 A | 2007-04-26 | CK000U4110, EM02NPI135 FS+30d |  | 78d | 2007-02-17 | 2007-02-19 | 104d | 0d |  | 2007-04-26 | EBWK 6 Day Egypt Holidays |  | 2006-07-29 | 110 | 0 | 0 | 02N | P0110 | 0 | 02 | CK | 1P1 | 02N | P0 | P | PS | C |  |  |  |  |  |  |  |  |  |
| CK02DP0110 |  | 02D A/G Pipe Spool Fabrication |  | 13d | 2006-11-12 A | 2007-05-30 | CK000U4110, EM02DPI135 FS+30d, CK02YP0110 SS+24d |  | 107d | 2006-12-02 | 2006-12-16 | 75d | 0d |  | 2007-05-30 | EBWK 6 Day Egypt Holidays |  | 2006-07-29 | 110 | 0 | 0 | 02D | P0110 | 30.00208333 | 02 | CK | 1P1 | 02D | P0 | P | PS | C |  |  |  |  |  |  |  |  |  |
| CK01YP0110 |  | 01Y A/G Pipe Spool Fabrication |  | 36d | 2006-11-13 A | 2007-02-28 | CK000U4110, EM01YPI135 FS+60d, CK02YP0110 SS+12d | 19% | 29d | 2006-11-18 | 2006-12-28 | 117d | 0d |  | 2007-02-28 | EBWK 6 Day Egypt Holidays |  | 2006-07-29 | 110 | 0 | 0 | 01Y | P0110 | 18.00208333 | 01 | CK | 1P1 | 01Y | P0 | P | PS | C |  |  |  |  |  |  |  |  |  |
| CK02BP0110 |  | 02B A/G Pipe Spool Fabrication |  | 6d | 2006-11-14 A | 2007-06-23 | CK000U4110 FS+30d, EM02BPI135 FS+30d, CK02YP0110 SS+24d |  | 127d | 2006-12-02 | 2006-12-07 | 55d | 0d |  | 2007-06-23 | EBWK 6 Day Egypt Holidays |  | 2006-07-29 | 110 | 0 | 0 | 02B | P0110 | 18.00208333 | 02 | CK | 1P1 | 02B | P0 | P | PS | C |  |  |  |  |  |  |  |  |  |
| CK02PP0110 |  | 02P A/G Pipe Spool Fabrication |  | 4d | 2006-11-14 A | 2007-05-21 | CK000U4110, EM02PPI135 FS+30d |  | 99d | 2007-01-27 | 2007-01-30 | 83d | 0d |  | 2007-05-21 | EBWK 6 Day Egypt Holidays |  | 2006-07-29 | 110 | 0 | 0 | 02P | P0110 | 0 | 02 | CK | 1P1 | 02P | P0 | P | PS | C |  |  |  |  |  |  |  |  |  |
| CK03CP0110 |  | 03C A/G Pipe Spool Fabrication |  | 10d | 2006-11-14 A | 2007-03-19 | CK000U4110, EM03CPI135 FS+30d, CK03YP0110 SS+12d |  | 45d | 2006-12-20 | 2007-01-07 | 137d | 0d |  | 2007-03-19 | EBWK 6 Day Egypt Holidays |  | 2006-07-29 | 110 | 0 | 0 | 03C | P0110 | 23 | 03 | CK | 1P1 | 03C | P0 | P | PS | C |  |  |  |  |  |  |  |  |  |
| CK02QP0110 |  | 02Q A/G Pipe Spool Fabrication |  | 4d | 2006-11-28 A | 2007-05-13 | CK000U4110 FS+96d, PK000PIA1M FS+30d, EM02QPI135 FS+30d |  | 80d | 2007-02-03 | 2007-02-06 | 90d | 0d |  | 2007-05-13 | EBWK 6 Day Egypt Holidays |  | 2006-07-29 | 110 | 0 | 0 | 02Q | P0110 | 0 | 02 | CK | 1P1 | 02Q | P0 | P | PS | C |  |  |  |  |  |  |  |  |  |
| CK02EP0110 |  | 02E A/G Pipe Spool Fabrication |  | 18d | 2006-12-02 A | 2007-03-27 | CK000U4110, EM02EPI135 FS+30d |  | 52d | 2006-11-29 | 2006-12-19 | 130d | 0d |  | 2007-03-27 | EBWK 6 Day Egypt Holidays |  | 2006-07-29 | 110 | 0 | 0 | 02E | P0110 | 5 | 02 | CK | 1P1 | 02E | P0 | P | PS | C |  |  |  |  |  |  |  |  |  |
| CK03YP0110 |  | 03Y A/G Pipe Spool Fabrication |  | 48d | 2006-12-09 A | 2007-03-08 | CK000U4110, EM03YPI135 FS+30d | 25% | 36d | 2006-12-06 | 2007-02-06 | 80d | 0d |  | 2007-03-08 | EBWK 6 Day Egypt Holidays |  | 2006-07-29 | 110 | 0 | 0 | 03Y | P0110 | -20 | 03 | CK | 1P1 | 03Y | P0 | P | PS | C |  |  |  |  |  |  |  |  |  |
| CK01AP0110 |  | 01A A/G Pipe Spool Fabrication |  | 6d | 2006-12-18 A | 2007-01-26 A | CK000U4110, EM01API135 FS+30d, CK01YP0110 SS+12d | 100% |  | 2007-01-06 | 2007-01-11 |  |  |  |  | EBWK 6 Day Egypt Holidays |  | 2006-07-29 | 110 | 0 | 0 | 01A | P0110 | -2.99791666 | 01 | CK | 1P1 | 01A | P0 | P | PS | C |  |  |  |  |  |  |  |  |  |
| CK01DP0110 |  | 01D A/G Pipe Spool Fabrication |  | 16d | 2006-12-19 A | 2007-04-21 | CK000U4110, EM01DPI135 FS+30d |  | 73d | 2007-01-23 | 2007-02-10 | 104d | 0d |  | 2007-04-21 | EBWK 6 Day Egypt Holidays |  | 2006-07-29 | 110 | 0 | 0 | 01D | P0110 | 0.99791666 | 01 | CK | 1P1 | 01D | P0 | P | PS | C |  |  |  |  |  |  |  |  |  |
| CK01BP0110 |  | 01B A/G Pipe Spool Fabrication |  | 20d | 2006-12-24 A | 2007-04-22 | CK000U4110, EM01BPI135 FS+30d |  | 71d | 2007-01-30 | 2007-02-21 | 101d | 0d |  | 2007-04-22 | EBWK 6 Day Egypt Holidays |  | 2006-07-29 | 110 | 0 | 0 | 01B | P0110 | 19 | 01 | CK | 1P1 | 01B | P0 | P | PS | C |  |  |  |  |  |  |  |  |  |
| CK02CP0110 |  | 02C A/G Pipe Spool Fabrication |  | 24d | 2007-02-24 | 2007-03-22 | CK000U4110, EM02CPI135 FS+30d |  |  |  |  | 134d | 0d | finish on or after 2007-03-18 |  | EBWK 6 Day Egypt Holidays |  | 2006-07-29 | 110 | 0 | 0 | 02C | P0110 | -3 | 02 | CK | 1P1 | 02C | P0 | P | PS | C |  |  |  |  |  |  |  |  |  |
| CK02GP0110 |  | 02G A/G Pipe Spool Fabrication |  | 30d | 2007-03-11 | 2007-04-14 | CK000U4110, EM02GPI135 FS+35d |  |  |  |  | 115d | 0d | finish on or after 2007-04-14 |  | EBWK 6 Day Egypt Holidays |  | 2006-07-29 | 110 | 0 | 0 | 02G | P0110 | -69 | 02 | CK | 1P1 | 02G | P0 | P | PS | C |  |  |  |  |  |  |  |  |  |
| CK03EP0110 |  | 03E A/G Pipe Spool Fabrication |  | 16d | 2007-03-14 | 2007-04-01 | CK000U4110, EM03EPI135 FS+30d |  |  |  |  | 126d | 0d | finish on or after 2007-04-01 |  | EBWK 6 Day Egypt Holidays |  | 2006-07-29 | 110 | 0 | 0 | 03E | P0110 | -59 | 03 | CK | 1P1 | 03E | P0 | P | PS | C |  |  |  |  |  |  |  |  |  |
| CK03FP0110 |  | 03F A/G Pipe Spool Fabrication |  | 10d | 2007-03-14 | 2007-03-25 | CK000U4110, EM03FPI135 FS+30d |  |  |  |  | 132d | 0d | finish on or after 2007-03-25 |  | EBWK 6 Day Egypt Holidays |  | 2006-07-29 | 110 | 0 | 0 | CK200 | P0110 | 1 | 03 | CK | 1P1 | 03F | P0 | P | PS | C |  |  |  |  |  |  |  |  |  |
| CK03AP0110 |  | 03A A/G Pipe Spool Fabrication |  | 10d | 2007-03-22 | 2007-04-02 | CK000U4110, EM03API135 FS+30d |  |  |  |  | 125d | 0d | finish on or after 2007-04-02 |  | EBWK 6 Day Egypt Holidays |  | 2006-07-29 | 110 | 0 | 0 | 03A | P0110 | -19 | 03 | CK | 1P1 | 03A | P0 | P | PS | C |  |  |  |  |  |  |  |  |  |
| CK02JP0110 |  | 02J A/G Pipe Spool Fabrication |  | 22d | 2007-03-25 | 2007-04-19 | CK000U4110, PK000PIA1M FS+30d, EM02JPI135 FS+30d |  |  |  |  | 111d | 0d | finish on or after 2007-04-19 |  | EBWK 6 Day Egypt Holidays |  | 2006-07-29 | 110 | 0 | 0 | 02J | P0110 | -2 | 02 | CK | 1P1 | 02J | P0 | P | PS | C |  |  |  |  |  |  |  |  |  |
| CK03DP0110 |  | 03D A/G Pipe Spool Fabrication |  | 5d | 2007-03-29 | 2007-04-03 | CK000U4110, EM03DPI135 FS+30d |  |  |  |  | 124d | 0d | finish on or after 2007-04-03 |  | EBWK 6 Day Egypt Holidays |  | 2006-07-29 | 110 | 0 | 0 | 03D | P0110 | 7 | 03 | CK | 1P1 | 03D | P0 | P | PS | C |  |  |  |  |  |  |  |  |  |
| CK01CP0110 |  | 01C A/G Pipe Spool Fabrication |  | 6d | 2007-03-29 | 2007-04-05 | CK000U4110, EM01CPI135 FS+30d |  |  |  |  | 123d | 0d | finish on or after 2007-04-05 |  | EBWK 6 Day Egypt Holidays |  | 2006-07-29 | 110 | 0 | 0 | 01C | P0110 | -37 | 01 | CK | 1P1 | 01C | P0 | P | PS | C |  |  |  |  |  |  |  |  |  |
| CK02MP0110 |  | 02M A/G Pipe Spool Fabrication |  | 15d | 2007-04-21 | 2007-05-07 | CK000U4110, EM02MPI135 FS+30d |  |  |  |  | 95d | 0d | finish on or after 2007-05-07 |  | EBWK 6 Day Egypt Holidays |  | 2006-07-29 | 110 | 0 | 0 | 02M | P0110 | 19 | 02 | CK | 1P1 | 02M | P0 | P | PS | C |  |  |  |  |  |  |  |  |  |
| CK03BP0110 |  | 03B A/G Pipe Spool Fabrication |  | 10d | 2007-04-28 | 2007-05-08 | CK000U4110 FS+114d, EM03BPI135 FS+30d |  |  |  |  | 94d | 0d | finish on or after 2007-05-08 |  | EBWK 6 Day Egypt Holidays |  | 2006-07-29 | 110 | 0 | 0 | 03B | P0110 | 0 | 03 | CK | 1P1 | 03B | P0 | P | PS | C |  |  |  |  |  |  |  |  |  |
| CK02LP0110 |  | 02L A/G Pipe Spool Fabrication |  | 44d | 2007-05-02 | 2007-06-21 | CK000U4110, EM02LPI135 FS+30d |  |  |  |  | 32d | 0d | finish on or after 2007-06-21 |  | EBWK 6 Day Egypt Holidays |  | 2006-07-29 | 110 | 0 | 0 |  |  | -2 | 02 | CK | 1P1 | 02L | P0 | P | PS | C |  |  |  |  |  |  |  |  |  |
| CK02KP0110 |  | 02K A/G Pipe Spool Fabrication |  | 21d | 2007-05-03 | 2007-05-27 | CK000U4110, EM02KPI135 FS+30d |  |  |  |  | 78d | 0d | finish on or after 2007-05-27 |  | EBWK 6 Day Egypt Holidays |  | 2006-07-29 | 110 | 0 | 0 | 02K | P0110 | -8 | 02 | CK | 1P1 | 02K | P0 | P | PS | C |  |  |  |  |  |  |  |  |  |
| CK02HP0110 |  | 02H A/G Pipe Spool Fabrication |  | 35d | 2007-05-19 | 2007-06-28 | CK000U4110, PK000PIA1M FS+30d, EM02HPI135 FS+35d |  |  |  |  | 51d | 0d | finish on or after 2007-06-28 |  | EBWK 6 Day Egypt Holidays |  | 2006-07-29 | 110 | 0 | 0 | 02H | P0110 | -19 | 02 | CK | 1P1 | 02H | P0 | P | PS | C |  |  |  |  |  |  |  |  |  |
| CK05AP0110 |  | 05A A/G Pipe Spool Fabrication |  | 29d | 2007-05-28 | 2007-06-30 | CK000U4110, EM05API135 FS+30d |  |  |  |  | 49d | 0d | finish on or after 2007-06-30 |  | EBWK 6 Day Egypt Holidays |  | 2006-07-29 | 110 | 0 | 0 | 05A | P0110 | -21 | 05 | CK | 1P1 | 05A | P0 | P | PS | C |  |  |  |  |  |  |  |  |  |
| CK02AP0110 |  | 02A A/G Pipe Spool Fabrication |  | 19d | 2007-06-04 | 2007-06-25 | CK000U4110 FS+84d, EM02API135 FS+30d |  |  |  |  | 53d | 0d | finish on or after 2007-06-25 |  | EBWK 6 Day Egypt Holidays |  | 2006-07-29 | 110 | 0 | 0 | 02A | P0110 | 0 | 02 | CK | 1P1 | 02A | P0 | P | PS | C |  |  |  |  |  |  |  |  |  |
| CK05BP0110 |  | 05B A/G Pipe Spool Fabrication |  | 8d | 2007-06-21 | 2007-06-30 | CK000U4110, EM05BPI135 FS+30d, CK000P0110 FF |  |  |  |  | 49d | 0d | finish on or after 2007-06-30 |  | EBWK 6 Day Egypt Holidays |  | 2006-07-29 | 110 | 0 | 0.3 | 05B | P0110 | 0 | 05 | CK | 1P1 | 05B | P0 | P | PS | C |  |  |  |  |  | 8 | 8 | 18 | 05A |

Notes:
- PO01EA0135: P3 Activity Log Info: Need to tie to material / deliveries
- PO01FA0135: P3 Activity Log Info: Need to tie to material / deliveries
- EK01EA0140: P3 Activity Log Info: Need to tie to material / deliveries
- EK01FA0140: P3 Activity Log Info: Need to tie to material / deliveries

| ID | WBS | Activity | Type | Duration | Start | Finish | Predecessors | Complete | Planned start | Planned finish | Calendar | Resources | zData Date | Sequence | PCA Criticality Index | PCA Duration Sensitivity | User Defined Field 1 | User Definer Field 2 | EB02 - UNIT | EB01 - RESP | EB06 - WORK OP | EB03 - AREA | EB05 - DISCIPLINE | EB04 - CLASS | EB11 - FLAG | EB00 - EPC | EB12 - TEMP | EB19 - System | EB07 - REQN |
| --- | --- | --- | --- | --- | --- | --- | --- | --- | --- | --- | --- | --- | --- | --- | --- | --- | --- | --- | --- | --- | --- | --- | --- | --- | --- | --- | --- | --- | --- |
|  | U4 | **U/G Pipe** |  |  | 2006-09-16 | 2007-01-25 |  |  |  |  |  |  |  |  |  |  |  |  |  |  |  |  |  |  |  |  |  |  |  |
| CK02AU4110 |  | 02A U/G Pipe Spool Fabrication |  | 9d | 2006-09-16 A | 2006-11-05 A | CK000U4110 | 100% | 2006-10-28 | 2006-11-06 | EBWK 6 Day Egypt Holidays | U/G Piping - Construction | 2006-07-29 | 110 | 0 | 0 | 02A | U4110 | 02 | CK | 1U1 | 02A | U4 | U | PS | C |  |  |  |
| CK02BU4110 |  | 02B U/G Pipe Spool Fabrication |  | 3d | 2006-09-16 A | 2006-09-19 A | CK000U4110 | 100% | 2006-10-30 | 2006-11-01 | EBWK 6 Day Egypt Holidays | U/G Piping - Construction | 2006-07-29 | 110 | 0 | 0 | 02B | U4110 | 02 | CK | 1U1 | 02B | U4 | U | PS | C |  |  |  |
| CK02CU4110 |  | 02C U/G Pipe Spool Fabrication |  | 16d | 2006-09-16 A | 2007-01-25 A | CK000U4110 FS+12d | 100% | 2006-11-04 | 2006-11-21 | EBWK 6 Day Egypt Holidays | U/G Piping - Construction | 2006-07-29 | 110 | 0 | 0 | 02C | U4110 | 02 | CK | 1U1 | 02C | U4 | U | PS | C |  |  |  |
| CK02DU4110 |  | 02D U/G Pipe Spool Fabrication |  | 6d | 2006-09-16 A | 2007-01-25 A | CK000U4110 FS+12d | 100% | 2006-11-08 | 2006-11-14 | EBWK 6 Day Egypt Holidays | U/G Piping - Construction | 2006-07-29 | 110 | 0 | 0 | 02D | U4110 | 02 | CK | 1U1 | 02D | U4 | U | PS | C |  |  |  |
| CK02EU4110 |  | 02E U/G Pipe Spool Fabrication |  | 8d | 2006-09-16 A | 2007-01-25 A | CK000U4110 FS+12d | 100% | 2006-11-11 | 2006-11-19 | EBWK 6 Day Egypt Holidays | U/G Piping - Construction | 2006-07-29 | 110 | 0 | 0 | 02E | U4110 | 02 | CK | 1U1 | 02E | U4 | U | PS | C |  |  |  |
| CK02UU4110 |  | 02U U/G Pipe Spool Fabrication (CW & Misc Headers) |  | 18d | 2006-09-16 A | 2006-11-05 A | CK000U4110, EM02UPIOWG FS+30d, EM02UPIFWG FS+30d, EM02UPICWG FS+30d, EM02UPICBG | 100% | 2006-09-09 | 2006-10-04 | EBWK 6 Day Egypt Holidays | U/G Piping - Construction | 2006-07-29 | 110 | 0 | 0 | 01D | U4110 | 02 | CK | 1U1 | 02Y | U4 | U | PS | C | 2Y | CW |  |
| WK000U4100 |  | 000 U/G Pipe Spool Fabrication | WBS summary | 79d | 2006-09-16 A | 2007-01-25 A | EM05UPI190, EM02UPICBG, EM02UPIFWG, EM02UPIOWG, EM01UPIFWG, EM01UPISSG, EM01UPIWWG, EM03UPIASG, EM03UPIFWG, EM03UPIOSG | 100% | 2006-09-09 | 2007-01-06 | EBWK 6 Day Egypt Holidays | Aboveground Pipe - Construction [10408.2 h] | 2006-07-29 | 120 | 0 | 0 | 01D | P0120 | 00 | CK | 1U1 | 000 | U4 | U | WC | C |  |  |  |
| CK000U4110 |  | Start Pipe Fab | milestone | 0d | 2006-09-16 A | 2006-09-16 A | PK000PIA1J, CO000CK110 SS+45d, WK000U4100 SS, CO000A0150 | 100% |  |  | EBWK 6 Day Egypt Holidays |  | 2006-07-29 | 110 | 0 | 0 | 01D | U4110 | 00 | CK | 000 | 000 | U4 | G | PS | C |  |  | Gen |
| CK02HU4110 |  | 02H U/G Pipe Spool Fabrication |  | 16d | 2006-10-04 A | 2007-01-25 A | CK000U4110 FS+38d | 100% | 2006-11-20 | 2006-12-07 | EBWK 6 Day Egypt Holidays | U/G Piping - Construction | 2006-07-29 | 110 | 0 | 0 | 02H | U4110 | 02 | CK | 1U1 | 02H | U4 | U | PS | C |  |  |  |
| CK02JU4110 |  | 02J U/G Pipe Spool Fabrication |  | 10d | 2006-10-18 A | 2006-11-05 A | CK000U4110 FS+34d | 100% | 2006-11-15 | 2006-11-26 | EBWK 6 Day Egypt Holidays | U/G Piping - Construction | 2006-07-29 | 110 | 0 | 0 | 02J | U4110 | 02 | CK | 1U1 | 02J | U4 | U | PS | C |  |  |  |
| CK02KU4110 |  | 02K U/G Pipe Spool Fabrication |  | 10d | 2006-10-18 A | 2007-01-25 A | CK000U4110 FS+32d | 100% | 2006-11-13 | 2006-11-23 | EBWK 6 Day Egypt Holidays | U/G Piping - Construction | 2006-07-29 | 110 | 0 | 0 | 02K | U4110 | 02 | CK | 1U1 | 02K | U4 | U | PS | C |  |  |  |
| CK02MU4110 |  | 02M U/G Pipe Spool Fabrication |  | 7d | 2006-10-18 A | 2006-11-05 A | CK000U4110 FS+22d | 100% | 2006-11-11 | 2006-11-18 | EBWK 6 Day Egypt Holidays | U/G Piping - Construction | 2006-07-29 | 110 | 0 | 0 | 02M | U4110 | 02 | CK | 1U1 | 02M | U4 | U | PS | C |  |  |  |
| CK02FU4110 |  | 02F U/G Pipe Spool Fabrication |  | 8d | 2006-11-05 A | 2007-01-25 A | CK000U4110 FS+36d | 100% | 2006-11-18 | 2006-11-26 | EBWK 6 Day Egypt Holidays |  | 2006-07-29 | 110 | 0 | 0 | 02F | U4110 | 02 | CK | 1U1 | 02F | U4 | U | PS | C |  |  |  |
| CK02GU4110 |  | 02G U/G Pipe Spool Fabrication |  | 14d | 2006-11-05 A | 2006-12-27 A | CK000U4110 FS+40d | 100% | 2006-11-22 | 2006-12-07 | EBWK 6 Day Egypt Holidays | U/G Piping - Construction | 2006-07-29 | 110 | 0 | 0 | 02G | U4110 | 02 | CK | 1U1 | 02G | U4 | U | PS | C |  |  |  |
| CK01BU4110 |  | 01B U/G Pipe Spool Fabrication |  | 10d | 2006-11-16 A | 2007-01-25 A | CK000U4110 FS+30d | 100% | 2006-12-11 | 2006-12-21 | EBWK 6 Day Egypt Holidays | U/G Piping - Construction | 2006-07-29 | 110 | 0 | 0 | 01B | U4110 | 01 | CK | 1U1 | 01B | U4 | U | PS | C |  |  |  |
| CK01CU4110 |  | 01C U/G Pipe Spool Fabrication |  | 6d | 2006-11-16 A | 2007-01-25 A | CK000U4110 FS+36d | 100% | 2006-12-16 | 2006-12-21 | EBWK 6 Day Egypt Holidays | U/G Piping - Construction | 2006-07-29 | 110 | 0 | 0 | 01C | U4110 | 01 | CK | 1U1 | 01C | U4 | U | PS | C |  |  |  |
| CK01DU4110 |  | 01D U/G Pipe Spool Fabrication |  | 8d | 2006-11-16 A | 2007-01-25 A | CK000U4110 FS+12d | 100% | 2006-12-14 | 2006-12-23 | EBWK 6 Day Egypt Holidays | U/G Piping - Construction | 2006-07-29 | 110 | 0 | 0 | 01D | U4110 | 01 | CK | 1U1 | 01D | U4 | U | PS | C |  |  |  |
| CK01EU4120 |  | 01E/F/G U/G Pipe Spool Fabrication (to Blg Stub Outs) |  | 18d | 2006-11-16 A | 2007-01-25 A | CK000U4110 FS+30d | 100% | 2006-12-02 | 2006-12-21 | EBWK 6 Day Egypt Holidays | U/G Piping - Construction | 2006-07-29 | 110 | 0 | 0 | 01G | U4110 | 01 | CK | 1U1 | 01G | U4 | U | PS | C | L1 |  |  |
| CK03AU4110 |  | 03A U/G Pipe Spool Fabrication |  | 5d | 2006-11-16 A | 2007-01-25 A | EM03UPI190 FS+30d, CK000U4110 FS+30d, EM03UPIASG, EM03UPIOSG | 100% | 2006-12-17 | 2006-12-21 | EBWK 6 Day Egypt Holidays | U/G Piping - Construction | 2006-07-29 | 110 | 0 | 0 | 03A | U4110 | 03 | CK | 1U1 | 03A | U4 | U | PS | C |  |  |  |
| CK03BU4110 |  | 03B U/G Pipe Spool Fabrication |  | 5d | 2006-11-16 A | 2007-01-25 A | EM03UPI190 FS+30d, CK000U4110 FS+24d, EM03UPIASG, EM03UPIOSG | 100% | 2006-12-14 | 2006-12-20 | EBWK 6 Day Egypt Holidays | U/G Piping - Construction | 2006-07-29 | 110 | 0 | 0 | 03B | U4110 | 03 | CK | 1U1 | 03B | U4 | U | PS | C |  |  |  |
| CK03CU4110 |  | 03C U/G Pipe Spool Fabrication |  | 5d | 2006-11-16 A | 2007-01-25 A | EM03UPI190 FS+30d, CK000U4110 FS+30d, EM03UPIASG, EM03UPIOSG | 100% | 2006-12-17 | 2006-12-21 | EBWK 6 Day Egypt Holidays | U/G Piping - Construction | 2006-07-29 | 110 | 0 | 0 | 03C | U4110 | 03 | CK | 1U1 | 03C | U4 | U | PS | C |  |  |  |
| CK03DU4110 |  | 03D U/G Pipe Spool Fabrication |  | 3d | 2006-11-16 A | 2007-01-25 A | EM03UPI190 FS+30d, CK000U4110 FS+24d, EM03UPIASG, EM03UPIOSG | 100% | 2006-12-09 | 2006-12-11 | EBWK 6 Day Egypt Holidays | U/G Piping - Construction | 2006-07-29 | 110 | 0 | 0 | 03D | U4110 | 03 | CK | 1U1 | 03D | U4 | U | PS | C |  |  |  |
| CK03EU4110 |  | 03E U/G Pipe Spool Fabrication |  | 18d | 2006-11-16 A | 2007-01-25 A | EM03UPI190 FS+30d, CK000U4110 FS+36d, EM03UPIASG, EM03UPIOSG | 100% | 2006-12-02 | 2006-12-21 | EBWK 6 Day Egypt Holidays | U/G Piping - Construction | 2006-07-29 | 110 | 0 | 0 | 03E | U4110 | 03 | CK | 1U1 | 03E | U4 | U | PS | C |  |  |  |
| CK03FU4110 |  | 03F U/G Pipe Spool Fabrication |  | 5d | 2006-11-16 A | 2007-01-25 A | EM03UPI190 FS+30d, CK000U4110 FS+36d, EM03UPIASG | 100% | 2006-12-17 | 2006-12-21 | EBWK 6 Day Egypt Holidays | U/G Piping - Construction | 2006-07-29 | 110 | 0 | 0 | CK200 | U4110 | 03 | CK | 1U1 | 03F | U4 | U | PS | C |  |  |  |
| CK05AU4110 |  | 05A U/G Pipe Spool Fabrication |  | 13d | 2006-11-16 A | 2007-01-25 A | EM05UPI190 FS+30d, CK000U4110 FS+60d, EM05UPI191 FS+30d | 100% | 2006-12-16 | 2007-01-06 | EBWK 6 Day Egypt Holidays | U/G Piping - Construction | 2006-07-29 | 110 | 0 | 0 | 05A | U4110 | 05 | CK | 1U1 | 05A | U4 | U | PS | C |  |  |  |
| CK02LU4110 |  | 02L U/G Pipe Spool Fabrication |  | 18d | 2006-12-02 A | 2007-01-25 A | CK000U4110 FS+26d | 100% | 2006-12-02 | 2006-12-21 | EBWK 6 Day Egypt Holidays | U/G Piping - Construction | 2006-07-29 | 110 | 0 | 0 |  |  | 02 | CK | 1U1 | 02L | U4 | U | PS | C |  |  |  |

| ID | WBS | Activity | Type | Duration | Start | Finish | Predecessors | Complete | Planned start | Planned finish | Total float | Free float | Constraint | Calendar | Resources | zData Date | PCA Criticality Index | PCA Duration Sensitivity | EB02 - UNIT | EB01 - RESP | EB06 - WORK OP | EB03 - AREA | EB05 - DISCIPLINE | EB04 - CLASS | EB11 - FLAG | EB00 - EPC | EB09 - IPMS | EB12 - TEMP | user_number1 | EB07 - REQN | EB10 - KEY | Sequence | User Defined Field 1 | User Definer Field 2 | EB08 - TAG | Optimistic Duration | Most Likely Duration | Pessimistic Duration | EB22 - Critical Actvities |
| --- | --- | --- | --- | --- | --- | --- | --- | --- | --- | --- | --- | --- | --- | --- | --- | --- | --- | --- | --- | --- | --- | --- | --- | --- | --- | --- | --- | --- | --- | --- | --- | --- | --- | --- | --- | --- | --- | --- | --- |
|  | C01 | **Construction OCI** |  |  | 2005-02-28 | 2009-04-14 |  |  |  |  |  |  |  |  |  |  |  |  |  |  |  |  |  |  |  |  |  |  |  |  |  |  |  |  |  |  |  |  |  |
|  | 00 | **Common** |  |  | 2005-02-28 | 2009-04-14 |  |  |  |  |  |  |  |  |  |  |  |  |  |  |  |  |  |  |  |  |  |  |  |  |  |  |  |  |  |  |  |  |  |
| EK000CK065 |  | Compl. Layout of Temp. Facil. (including OCI) |  | 45d | 2005-02-28 A | 2005-10-31 A | EK000AR020 SS | 100% | 2005-02-28 | 2005-04-29 |  |  |  |  |  | 2006-07-29 | 0 | 0 | 00 | EK | G10 | 000 | CK | X | X | C |  |  |  |  |  |  |  |  |  |  |  |  |  |
| EK000CK075 |  | Review Tech & Commercial Proposal - Field Fab Tank |  | 41d | 2005-03-18 A | 2005-11-01 A | EK000GE005 FS+1d | 100% | 2005-03-18 | 2005-05-13 |  |  |  |  |  | 2006-07-29 | 0 | 0 | 00 | EK | G10 | 000 | CK | X | X | C | F |  |  |  |  |  |  |  |  |  |  |  |  |
| EK000CK060 |  | Locate tie in pnts for temp water, phone, & pwr |  | 15d | 2005-03-28 A | 2005-04-15 A | EK000CK100 SS | 100% |  |  |  |  |  |  |  | 2006-07-29 | 0 | 0 | 00 | EK | G10 | 000 | CK | X | X | C |  |  |  |  |  |  |  |  |  |  |  |  |  |
| EK000CK100 |  | Site Visit - Construction |  | 15d | 2005-03-28 A | 2005-04-15 A | EK000YA002 SS | 100% |  |  |  |  |  |  |  | 2006-07-29 | 0 | 0 | 00 | EK | G10 | 000 | CK | X | X | C |  |  |  |  |  |  |  |  |  |  |  |  |  |
| EK000CK005 |  | OCI Subcontract - Executed |  | 10d | 2005-04-18 A | 2005-12-19 A | EK000CK010 FF, EK000CK015 FF, EK000GE150 | 100% | 2005-04-18 | 2005-04-29 |  |  |  |  |  | 2006-07-29 | 0 | 0 | 00 | EK | G10 | 000 | CK | X | X | C |  |  |  |  |  |  |  |  |  |  |  |  |  |
| EK000CK010 |  | OCI Meeting to Define custom clearance requests |  | 15d | 2005-06-20 A | 2005-07-20 A | EK000CK100 FS+10d, EK000YA002 SS+20d | 100% | 2005-06-03 | 2005-06-23 |  |  |  |  |  | 2006-07-29 | 0 | 0 | 00 | EK | G10 | 000 | CK | X | X | C |  |  |  |  |  |  |  |  |  |  |  |  |  |
| EK000CK015 |  | Define OCI's Point of Delivery & Liability |  | 15d | 2005-06-20 A | 2005-07-20 A | EK000CK010 SS, EK000YA002 SS+20d | 100% | 2005-06-03 | 2005-06-23 |  |  |  |  |  | 2006-07-29 | 0 | 0 | 00 | EK | G10 | 000 | CK | X | X | C |  |  |  |  |  |  |  |  |  |  |  |  |  |
| EK000CV038 |  | Select Geotech Vendor / Issue Award |  | 25d | 2005-06-20 A | 2005-09-16 A | EK000CV036 | 100% | 2005-06-03 | 2005-07-11 |  |  |  |  |  | 2006-07-29 | 0 | 0 | 00 | EK | G10 | 000 | CK | C | X | E |  | S1 |  |  |  |  |  |  |  |  |  |  |  |
| EK000CV039 |  | Geotech Conducts Soil Borings / Draft Prelim Report |  | 50d | 2005-09-24 A | 2006-01-16 A | EK000CV038 | 100% | 2005-09-17 | 2005-11-28 |  |  |  | EBWK 6 Day Egypt Holidays |  | 2006-07-29 | 0 | 0 | 00 | CK | 000 | 000 | YA | G | X | C |  | S1 |  |  |  |  |  |  |  |  |  |  |  |
| CO000GE105 |  | Commence Admin. Building Design (OCI) | milestone | 0d | 2005-11-04 A | 2005-11-04 A | EK000EB015 | 100% |  |  |  |  |  | EBWK 7 Day No Holidays |  | 2006-07-29 | 0 | 0 | 00 | CO | 1A1 | 000 | YA | G |  | C |  |  |  |  |  |  |  |  |  |  |  |  |  |
| CO000K0106 |  | Mobilize Temporary Facilities (& Punchlist & Perm. Power) |  | 132d | 2005-12-10 A | 2006-10-31 A | EK000CK085 FF, EK000CK075, XE000OW310 FF, XE000OW325 FF, XE000OW290 FF+20d, EK000YA002 SS, XE000OW160, EK000CK065 | 100% | 2006-02-25 | 2006-07-29 |  |  |  | EBWK 6 Day Egypt Holidays |  | 2006-07-29 | 0 | 0 | 00 | CO | 000 | 000 | GE | G | PS | C |  | Y | 12 | Gen |  |  |  |  |  |  |  |  |  |
| EK000GE150 |  | Execute OCI Subcontract (KBR) | milestone | 0d | 2005-12-17 A | 2005-12-17 A | EK000EB015 | 100% |  |  |  |  |  | EBWK 7 Day No Holidays |  | 2006-07-29 | 0 | 0 | 00 | CK | 000 | 000 | YA | G |  | C |  |  |  |  |  |  |  |  |  |  |  |  |  |
| EK000GE170 |  | Issue Material Supply PO to OCI (Elect, Struct, Insul) | milestone | 0d | 2006-01-11 A | 2006-01-11 A | EK000GE150 | 100% | 2006-02-16 | 2006-02-16 |  |  |  | EBWK 7 Day No Holidays |  | 2006-07-29 | 0 | 0 | 00 | CK | 000 | 000 | YA | G |  | C |  |  |  |  |  |  |  |  |  |  |  |  |  |
| CK000YA306 |  | Establish Tax Free Zone Status |  | 45d | 2006-01-13 A | 2006-03-03 A | EK000YA000, EK000CK080 SS | 100% | 2006-03-20 | 2006-05-19 |  |  |  |  |  | 2006-07-29 | 0 | 0 | 00 | CK | 000 | 000 | YA | G |  | C |  | Y |  |  |  |  |  |  |  |  |  |  |  |
| CO000M0100 |  | Commence Engineering - Field Fab Tanks | milestone | 0d | 2006-02-04 A | 2006-02-04 A | PO000MF000 | 100% | 2006-02-13 | 2006-02-13 |  |  |  | EBWK 6 Day Egypt Holidays |  | 2006-07-29 | 0 | 0 | 00 | CT | G10 | 000 | YA | G | C | C |  |  |  |  | T |  |  |  |  |  |  |  |  |
| CO000CK110 |  | Set-Up KBR Pipe Fab Shop |  | 55d | 2006-04-24 A | 2006-10-31 A | EK000YA000 | 100% | 2006-05-13 | 2006-07-15 |  |  |  | EBWK 6 Day Egypt Holidays |  | 2006-07-29 | 0 | 0 | 00 | CO | 1A1 | 000 | GE | A | PS | C |  | Y | 17 |  |  |  |  |  |  |  |  |  |  |
| CO000A0110 |  | Start Buildings - Admin, Canteen, Warehouse, Control | milestone | 0d | 2006-05-01 A | 2006-05-01 A | XE000K0110, CK000YA306, XE000OW270, CO000K0100 SS+1d | 100% | 2006-06-03 | 2006-06-03 |  |  |  | EBWK 6 Day Egypt Holidays |  | 2006-07-29 | 0 | 0 | 00 | CO | 1A1 | 000 | A0 | A |  | C |  |  |  |  |  | 150 | 01F | C0150 |  |  |  |  |  |
| CO000K0100 |  | Start Construction | milestone | 0d | 2006-05-01 A | 2006-05-01 A | EK000YA000, XE000OW341 | 100% | 2006-06-01 | 2006-06-01 |  |  |  | EBWK 6 Day Egypt Holidays |  | 2006-07-29 | 0 | 0 | 00 | CO | 000 | 000 | GE | G | PS | C |  | Y |  | Gen |  |  |  |  |  |  |  |  |  |
| CO000A0150 |  | Install Guard Towers |  | 15d | 2006-05-02 A | 2006-05-15 A | CO000C0150 SS | 100% | 2006-05-16 | 2006-06-01 |  |  |  | EBWK 6 Day Egypt Holidays |  | 2006-07-29 | 0 | 0 | 00 | CO | G10 | 000 | GE | A | PS | C |  |  |  |  |  |  |  |  |  |  |  |  |  |
| CO000K0108 |  | Start Foundations - Field Fab Tanks | milestone | 0d | 2006-05-10 A | 2006-05-10 A | CO000K0100 SS+1d, EK000YA000 | 100% | 2006-06-15 | 2006-06-15 |  |  |  | EBWK 6 Day Egypt Holidays |  | 2006-07-29 | 0 | 0 | 00 | CO | 000 | 000 | GE | G | PS | C |  | Y |  | Gen |  |  |  |  |  |  |  |  |  |
| CO000K0110 |  | Start Foundations - Equipment & Piperacks | milestone | 0d | 2006-05-10 A | 2006-05-10 A | EK020PI014, EK000CK005, EK000CV165, EK000CV040, CO000K0100 SS+1d | 100% | 2006-06-03 | 2006-06-03 |  |  |  | EBWK 6 Day Egypt Holidays |  | 2006-07-29 | 0 | 0 | 00 | CO | 000 | 000 | GE | G | PS | C |  | Y |  | Gen |  |  |  |  |  |  |  |  |  |
| CO010K0120 |  | 010 Construct Perimeter Roads |  | 68d | 2006-05-15 A | 2006-05-31 A | CO000A0150 | 100% | 2006-05-15 | 2006-08-01 |  |  |  | EBWK 6 Day Egypt Holidays | Site Preparation/ Other Civil - Construction | 2006-07-29 | 0 | 0 | 01 | CO | 1K0 | 010 | K0 | K |  | C |  |  |  |  |  | 150 | 000 | C0150 |  |  |  |  |  |
| CO000M0110 |  | Mobilize Field Fab Tank Contractor |  | 28d | 2006-06-20 A | 2006-08-12 A | CO000M0100 SS+40d, PO000MF000 | 100% | 2006-06-24 | 2006-07-25 |  |  |  | EBWK 6 Day Egypt Holidays |  | 2006-07-29 | 0 | 0 | 00 | CT | 000 | 000 | GE | G | PS | C |  | Y |  | Gen | T |  |  |  |  |  |  |  |  |
| CO02HM0135 |  | 02H Give 30 Day notice to Manufacture Refractory (103-D) | milestone | 0d | 2007-04-15 | 2007-04-15 | EK000YA000 |  |  |  | -40d | 0d | as late as possible | EBWK 6 Day Egypt Holidays |  | 2006-07-29 | 0 | 0 | 02 | CO | 1M1 | 02H | M0 | M |  | C |  |  | 78 |  |  | 130 | CK02H | M0130 | 103D |  |  |  |  |
| SC000YA100 |  | Construction Bonus Period |  | 175d | 2008-10-23 | 2009-04-14 | EK000YA887, SC000T0120 |  | 2008-10-23 | 2009-04-15 | -59d | 0d | start on or after 2008-08-25 | EBWK 7 Day No Holidays |  | 2006-07-29 | 100 | 0 | 00 | SC | 000 | 000 | GE | G |  | S |  | L3 |  | Gen |  |  |  |  |  | 160 | 167 | 170 | C1 |

| ID | WBS | Activity | Type | Duration | Start | Finish | Predecessors | Planned start | Planned finish | Total float | Free float | Calendar | Resources | zData Date | Sequence | PCA Criticality Index | PCA Duration Sensitivity | User Defined Field 1 | User Definer Field 2 | EB02 - UNIT | EB01 - RESP | EB06 - WORK OP | EB03 - AREA | EB05 - DISCIPLINE | EB04 - CLASS | EB11 - FLAG | EB00 - EPC | Optimistic Duration | Most Likely Duration | Pessimistic Duration | EB22 - Critical Actvities | EB12 - TEMP | EB21 - Rev 2 Risk Associations | user_integer1 | user_integer2 | EB07 - REQN | EB14 - RISK |
| --- | --- | --- | --- | --- | --- | --- | --- | --- | --- | --- | --- | --- | --- | --- | --- | --- | --- | --- | --- | --- | --- | --- | --- | --- | --- | --- | --- | --- | --- | --- | --- | --- | --- | --- | --- | --- | --- |
|  | C0 | **Concrete / Piling** |  |  |  |  |  |  |  |  |  |  |  |  |  |  |  |  |  |  |  |  |  |  |  |  |  |  |  |  |  |  |  |  |  |  |  |
|  | C1 | **Concrete Paving** |  |  |  |  |  |  |  |  |  |  |  |  |  |  |  |  |  |  |  |  |  |  |  |  |  |  |  |  |  |  |  |  |  |  |  |
|  | U4 | **U/G Piping** |  |  |  |  |  |  |  |  |  |  |  |  |  |  |  |  |  |  |  |  |  |  |  |  |  |  |  |  |  |  |  |  |  |  |  |
|  | U3 | **U/G Electrical** |  |  |  |  |  |  |  |  |  |  |  |  |  |  |  |  |  |  |  |  |  |  |  |  |  |  |  |  |  |  |  |  |  |  |  |
|  | A0 | **Buildings** |  |  |  |  |  |  |  |  |  |  |  |  |  |  |  |  |  |  |  |  |  |  |  |  |  |  |  |  |  |  |  |  |  |  |  |
|  | S0 | **Structural / Misc. Steel** |  |  |  |  |  |  |  |  |  |  |  |  |  |  |  |  |  |  |  |  |  |  |  |  |  |  |  |  |  |  |  |  |  |  |  |
|  | M0 | **Mechanical Equipment** |  |  |  |  |  |  |  |  |  |  |  |  |  |  |  |  |  |  |  |  |  |  |  |  |  |  |  |  |  |  |  |  |  |  |  |
|  | P0 | **A/G Piping** |  |  |  |  |  |  |  |  |  |  |  |  |  |  |  |  |  |  |  |  |  |  |  |  |  |  |  |  |  |  |  |  |  |  |  |
|  | E0 | **A/G Electrical** |  |  |  |  |  |  |  |  |  |  |  |  |  |  |  |  |  |  |  |  |  |  |  |  |  |  |  |  |  |  |  |  |  |  |  |
|  | I0 | **Instrumentation** |  |  |  |  |  |  |  |  |  |  |  |  |  |  |  |  |  |  |  |  |  |  |  |  |  |  |  |  |  |  |  |  |  |  |  |
|  | V1 | **Painting** |  |  |  |  |  |  |  |  |  |  |  |  |  |  |  |  |  |  |  |  |  |  |  |  |  |  |  |  |  |  |  |  |  |  |  |
|  | V2 | **Insulation** |  |  |  |  |  |  |  |  |  |  |  |  |  |  |  |  |  |  |  |  |  |  |  |  |  |  |  |  |  |  |  |  |  |  |  |
|  | K0 | **Site Prep** |  |  |  |  |  |  |  |  |  |  |  |  |  |  |  |  |  |  |  |  |  |  |  |  |  |  |  |  |  |  |  |  |  |  |  |
|  | 01 | **Perimeter Wall** |  |  |  |  |  |  |  |  |  |  |  |  |  |  |  |  |  |  |  |  |  |  |  |  |  |  |  |  |  |  |  |  |  |  |  |
|  | T0 | **Mechanical Completion** |  |  |  |  |  |  |  |  |  |  |  |  |  |  |  |  |  |  |  |  |  |  |  |  |  |  |  |  |  |  |  |  |  |  |  |
|  | T1 | **Commissioning** |  |  | 2008-01-06 | 2008-10-22 |  |  |  |  |  |  |  |  |  |  |  |  |  |  |  |  |  |  |  |  |  |  |  |  |  |  |  |  |  |  |  |
| SC02GI0150 |  | 02G Function Testing |  | 34d | 2008-01-06 | 2008-02-08 | CO02GI0130 SS, CO02GI0130 FF+12d, CO02GI0140 SS, CO02GI0140 FF+6d |  |  | 63d | 0d | EBWK 7 Day No Holidays |  | 2006-07-29 | 150 | 0 | 0 | 02G | I0150 | 02 | SC | I00 | 02G | I0 | I | C | S |  |  |  |  |  |  |  |  |  |  |
| WC000T1100 |  | 000 Commissioning | WBS summary | 291d | 2008-01-06 | 2008-10-22 | EK000YA002 |  |  | -59d | 174d | EBWK 7 Day No Holidays | Precommissioning/ Commissioning [130000 h] | 2006-07-29 | 120 | 0 | 0 | 03A | T0120 | 00 | SC | 000 | 000 | T0 | T | WC | S | 5 | 7 | 14 |  |  |  |  |  |  |  |
| SC03AI0150 |  | 03A Function Testing |  | 11d | 2008-01-09 | 2008-01-19 | CO03AI0130 FF+6d, CO03AI0140 |  |  | -47d | 0d | EBWK 7 Day No Holidays |  | 2006-07-29 | 150 | 0 | 0 | 03A | I0150 | 03 | SC | I00 | 03A | I0 | I | C | S |  |  |  |  |  |  |  |  |  |  |
| SC01DI0150 |  | 01D Function Testing |  | 18d | 2008-01-11 | 2008-01-28 | CO01DI0130 SS, CO01DI0130 FF+12d, CO01DI0140 |  |  | -28d | 0d | EBWK 7 Day No Holidays |  | 2006-07-29 | 150 | 5.1 | 1.7 | 01D | I0150 | 01 | SC | I00 | 01D | I0 | I | C | S | 11 | 18 | 25 | C4 |  |  |  |  |  |  |
| SC03FI0150 |  | 03F Function Testing |  | 11d | 2008-01-13 | 2008-01-23 | CO03FI0130 SS, CO03FI0130 FF+12d, CO03FI0140 |  |  | -2d | 0d | EBWK 7 Day No Holidays |  | 2006-07-29 | 150 | 0 | 0 | CK200 | I0150 | 03 | SC | I00 | 03F | I0 | I | C | S |  |  |  |  |  |  |  |  |  |  |
| SC02BI0150 |  | 02B Function Testing |  | 3d | 2008-01-15 | 2008-01-17 | CO02BI0130 SS, CO02BI0130 FF+12d, CO02BI0140 |  |  | 85d | 0d | EBWK 7 Day No Holidays |  | 2006-07-29 | 150 | 0 | 0 | 02B | I0150 | 02 | SC | I00 | 02B | I0 | I |  | S |  |  |  |  |  |  |  |  |  |  |
| SC02CI0150 |  | 02C Function Testing |  | 39d | 2008-01-16 | 2008-02-23 | CO02CI0130 SS, CO02CI0130 FF+12d, CO02CI0140 SS, CO02CI0140 FF+6d |  |  | 48d | 0d | EBWK 7 Day No Holidays |  | 2006-07-29 | 150 | 0 | 0 | 02C | I0150 | 02 | SC | I00 | 02C | I0 | I | C | S |  |  |  |  |  |  |  |  |  |  |
| SC02YI0150 |  | 02Y Function Testing |  | 24d | 2008-01-17 | 2008-02-09 | CO02YI0130 SS, CO02YI0130 FF+12d, CO02YI0140 SS, CO02YI0140 FF+6d |  |  | 62d | 0d | EBWK 7 Day No Holidays |  | 2006-07-29 | 150 | 0 | 0 | 02Y | I0150 | 02 | SC | I00 | 02Y | I0 | I | C | S |  |  |  |  |  |  |  |  |  |  |
| SC02AI0150 |  | 02A Function Testing |  | 23d | 2008-01-20 | 2008-02-11 | CO02AI0130 SS, CO02AI0130 FF+12d, CO02AI0140 |  |  | 60d | 0d | EBWK 7 Day No Holidays |  | 2006-07-29 | 150 | 0 | 0 | 02A | I0150 | 02 | SC | I00 | 02A | I0 | I | C | S |  |  |  |  |  |  |  |  |  |  |
| SC02DI0150 |  | 02D Function Testing |  | 15d | 2008-01-20 | 2008-02-03 | CO02DI0130 SS, CO02DI0130 FF+12d, CO02DI0140 |  |  | 68d | 0d | EBWK 7 Day No Holidays |  | 2006-07-29 | 150 | 0 | 0 | 02D | I0150 | 02 | SC | I00 | 02D | I0 | I | C | S |  |  |  |  |  |  |  |  |  |  |
| SC03AT0130 |  | 03A Commission |  | 7d | 2008-01-20 | 2008-01-26 | CO03AT0110, SC01HT0120 FS+7d, CO01CA0110, CO01FA0130, CO01EA0130, CO01HA0110, CO01GA0110, CK02UU4150 FF+72d, CK01UU4150 FF+72d, CK03UU4150 FF+72d, CK01DU4110 FF+72d, CK01BU4110 FF+72d, CK02UU4110 FF+72d, CK02CU4110 FF+72d, CK02HU4110 FF+72d, CK02JU4110 FF+72d, CK02KU4110 FF+72d, CK02MU4110 FF+72d, CK02GU4110 FF+72d, CK02LU4110 FF+72d, CK03DU4110 FF+72d, CK03BU4110 FF+72d, CK02EU4110 FF+72d, CK02FU4110 FF+72d, CK02BU4110 FF+72d, CK03AU4110 FF+72d, CK03CU4110 FF+72d, CK02DU4110 FF+72d, CK01EU4120 FF+72d, CK03FU4110 FF+72d, CK01CU4110 FF+72d, CK02AU4110 FF+72d, CK03EU4110 FF+72d, CK05AU4110 FF+72d, CK02BP0110 FF+72d, CK01YP0110 FF+72d, CK02YP0110 FF+72d, CK03CP0110 FF+72d, CK02EP0110 FF+72d, CK01AP0110 FF+72d, CK02DP0110 FF+72d, CK03DP0110 FF+72d, CK03AP0110 FF+72d, CK01CP0110 FF+72d, CK01BP0110 FF+72d, CK02AP0110 FF+72d, CK01DP0110 FF+72d, CK02PP0110 FF+72d, CK02LP0110 FF+72d, CK05AP0110 FF+72d, CK02FP0110 FF+72d, CK02KP0110 FF+72d, CK03FP0110 FF+72d, CK02CP0110 FF+72d, CK02NP0110 FF+72d, CK03YP0110 FF+72d, CK02MP0110 FF+72d, CK03BP0110 FF+72d, CK03EP0110 FF+72d, CK05BP0110 FF+72d, CK02GP0110 FF+72d, CK02QP0110 FF+72d, CK02JP0110 FF+72d, CK02HP0110 FF+72d, CO01BU3110, CO01UP0150, CO02UP0150, CO02BU4120, CO03UP0150, CO05AU3110, CO05AU4120, CK000U4110 FF+72d, PK000PIA4J FF+72d, EM04API138 FF+102d, CO01JC0150, SC03AT0120 |  |  | -47d | 0d | EBWK 7 Day No Holidays |  | 2006-07-29 | 120 | 56.7 | 6.2 | 03A | T0120 | 03 | SC | 000 | 03A | T0 | T | C | S | 5 | 7 | 14 | C3 | L2 |  |  |  |  |  |
| SC02KI0150 |  | 02K Function Testing |  | 25d | 2008-01-22 | 2008-02-15 | CO02KI0130 SS, CO02KI0130 FF+12d, CO02KI0140 |  |  | 56d | 0d | EBWK 7 Day No Holidays |  | 2006-07-29 | 150 | 0.2 | 0 | 02K | I0150 | 02 | SC | I00 | 02K | I0 | I | C | S |  |  |  |  |  |  |  |  |  |  |
| SC02NI0150 |  | 02N Function Testing |  | 3d | 2008-01-22 | 2008-01-24 | CO02NI0130 SS, CO02NI0130 FF+12d, CO02NI0140 |  |  | 78d | 12d | EBWK 7 Day No Holidays |  | 2006-07-29 | 150 | 0 | 0 | 02N | I0150 | 02 | SC | I00 | 02N | I0 | I | C | S |  |  |  |  |  |  |  |  |  |  |
| SC01CI0150 |  | 01C Function Testing |  | 6d | 2008-01-23 | 2008-01-28 | CO01CI0130 SS, CO01CI0130 FF+12d, CO01CI0140 |  |  | -14d | 0d | EBWK 7 Day No Holidays |  | 2006-07-29 | 150 | 0 | 0 | 01C | I0150 | 01 | SC | I00 | 01C | I0 | I | C | S | 5 | 6 | 13 |  |  |  |  |  |  |  |
| SC01YI0150 |  | 01Y Function Testing |  | 18d | 2008-01-23 | 2008-02-09 | CO01YI0130 SS, CO01YI0130 FF+12d, CO01YI0140 SS, CO01YI0140 FF+6d |  |  | 62d | 0d | EBWK 7 Day No Holidays |  | 2006-07-29 | 150 | 0 | 0 | 01Y | I0150 | 01 | SC | I00 | 01Y | I0 | I | C | S |  |  |  |  |  |  |  |  |  |  |
| SC02PI0150 |  | 02P Function Testing |  | 5d | 2008-01-23 | 2008-01-27 | CO02PI0130 SS, CO02PI0130 FF+12d, CO02PI0140 |  |  | 75d | 0d | EBWK 7 Day No Holidays |  | 2006-07-29 | 150 | 0 | 0 | 02P | I0150 | 02 | SC | I00 | 02P | I0 | I | C | S |  |  |  |  |  |  |  |  |  |  |
| SC03BI0150 |  | 03B Function Testing |  | 11d | 2008-01-23 | 2008-02-02 | CO03BI0130 SS, CO03BI0130 FF+12d, CO03BI0140 |  |  | 69d | 0d | EBWK 7 Day No Holidays |  | 2006-07-29 | 150 | 0 | 0 | 03B | I0150 | 03 | SC | I00 | 03B | I0 | I | C | S |  |  |  |  |  |  |  |  |  |  |
| SC02QI0150 |  | 02Q Function Testing |  | 5d | 2008-01-24 | 2008-01-28 | CO02QI0130 SS, CO02QI0130 FF+12d, CO02QI0140 |  |  | 74d | 0d | EBWK 7 Day No Holidays |  | 2006-07-29 | 150 | 0 | 0 | 02Q | I0150 | 02 | SC | I00 | 02Q | I0 | I | C | S |  |  |  |  |  |  |  |  |  |  |
| SC02MI0150 |  | 02M Function Testing |  | 18d | 2008-01-25 | 2008-02-11 | CO02MI0130 SS, CO02MI0130 FF+12d, CO02MI0140 |  |  | 60d | 0d | EBWK 7 Day No Holidays |  | 2006-07-29 | 150 | 0 | 0 | 02M | I0150 | 02 | SC | I00 | 02M | I0 | I | C | S |  |  |  |  |  |  |  |  |  |  |
| SC01DT0130 |  | 01D Commission |  | 42d | 2008-01-27 | 2008-03-08 | CO01DT0110, SC01DT0120 FF+21d, SC03AT0130 |  |  | -47d | 0d | EBWK 7 Day No Holidays |  | 2006-07-29 | 120 | 61.7 | 14.6 | 01D | T0120 | 01 | SC | 000 | 01D | T0 | T | C | S | 36 | 42 | 49 | C3 | L2 |  |  |  |  |  |
| SC02EI0150 |  | 02E Function Testing |  | 21d | 2008-01-27 | 2008-02-16 | CO02EI0130 SS, CO02EI0130 FF+12d, CO02EI0140 |  |  | 55d | 0d | EBWK 7 Day No Holidays |  | 2006-07-29 | 150 | 0 | 0 | 02E | I0150 | 02 | SC | I00 | 02E | I0 | I | C | S |  |  |  |  |  |  |  |  |  |  |
| SC03CI0150 |  | 03C Function Testing |  | 11d | 2008-01-27 | 2008-02-06 | CO03CI0130 SS, CO03CI0130 FF+12d, CO03CI0140 |  |  | -23d | 0d | EBWK 7 Day No Holidays |  | 2006-07-29 | 150 | 0 | 0.7 | 03C | I0150 | 03 | SC | I00 | 03C | I0 | I | C | S | 7 | 11 | 18 |  |  |  |  |  |  |  |
| SC01AI0150 |  | 01A Function Testing |  | 1d | 2008-01-28 | 2008-01-28 | CO01AI0130, CO01AI0140, CO01AT0110 |  |  | -14d | 0d | EBWK 7 Day No Holidays |  | 2006-07-29 | 150 | 0 | 0 | 01A | I0150 | 01 | SC | I00 | 01A | I0 | I | C | S |  |  |  |  |  |  |  |  |  |  |
| SC01BI0150 |  | 01B Function Testing |  | 22d | 2008-01-28 | 2008-02-18 | CO01BI0130 SS, CO01BI0130 FF+12d, CO01BI0140 |  |  | -35d | 0d | EBWK 7 Day No Holidays |  | 2006-07-29 | 150 | 5.9 | 0 | 01B | I0150 | 01 | SC | I00 | 01B | I0 | I | C | S | 15 | 22 | 29 | C4 |  |  |  |  |  |  |
| SC02JI0150 |  | 02J Function Testing |  | 26d | 2008-01-28 | 2008-02-22 | CO02JI0130 SS, CO02JI0130 FF+12d, CO02JI0140 |  |  | 49d | 0d | EBWK 7 Day No Holidays |  | 2006-07-29 | 150 | 0 | 0 | 02J | I0150 | 02 | SC | I00 | 02J | I0 | I | C | S |  |  |  |  |  |  |  |  |  |  |
| SC03DI0150 |  | 03D Function Testing |  | 6d | 2008-01-29 | 2008-02-03 | CO03DI0130 SS, CO03DI0130 FF+12d, CO03DI0140 |  |  | -20d | 0d | EBWK 7 Day No Holidays |  | 2006-07-29 | 150 | 0 | 0.8 | 03D | I0150 | 03 | SC | I00 | 03D | I0 | I | C | S | 5 | 6 | 12 |  |  |  |  |  |  |  |
| SC03YI0150 |  | 03Y Function Testing |  | 24d | 2008-01-31 | 2008-02-23 | CO03YI0130 SS, CO03YI0130 FF+12d, CO03YI0140 SS, CO03YI0140 FF+6d |  |  | 48d | 0d | EBWK 7 Day No Holidays |  | 2006-07-29 | 150 | 0 | 0 | 03Y | I0150 | 03 | SC | I00 | 03Y | I0 | I | C | S |  |  |  |  |  |  |  |  |  |  |
| SC02FI0150 |  | 02F Function Testing |  | 19d | 2008-02-01 | 2008-02-19 | CO02FI0130 SS, CO02FI0130 FF+12d, CO02FI0140 |  |  | 52d | 0d | EBWK 7 Day No Holidays |  | 2006-07-29 | 150 | 0 | 0 | 02F | I0150 | 02 | SC | I00 | 02F | I0 | I | C | S |  |  |  |  |  |  |  |  |  |  |
| SC03EI0150 |  | 03E Function Testing |  | 18d | 2008-02-04 | 2008-02-21 | CO03EI0130 SS, CO03EI0130 FF+12d, CO03EI0140 |  |  | -38d | 0d | EBWK 7 Day No Holidays |  | 2006-07-29 | 150 | 0.6 | 0.5 | 03E | I0150 | 03 | SC | I00 | 03E | I0 | I | C | S | 12 | 18 | 25 | C5 |  |  |  |  |  |  |
| SC02HI0150 |  | 02H Function Testing |  | 41d | 2008-02-19 | 2008-03-30 | CO02HI0130 SS, CO02HI0130 FF+12d, CO02HI0140 SS, CO02HI0140 FF+6d |  |  | 12d | 0d | EBWK 7 Day No Holidays |  | 2006-07-29 | 150 | 2.1 | 0 | 02H | I0150 | 02 | SC | I00 | 02H | I0 | I | C | S | 35 | 41 | 45 |  |  |  |  |  |  |  |
| SC05BI0150 |  | 05B Function Testing |  | 3d | 2008-03-06 | 2008-03-09 | CO05BI0130 SS, CO05BI0130 FF+12d, CO05BI0140 |  |  | 79d | 7d | EBWK 7 Day No Holidays |  | 2006-07-29 | 150 | 0 | 0 | 05B | I0150 | 05 | SC | I00 | 05B | I0 | I | C | S | 2 | 3 | 4 |  |  | 05A |  |  |  |  |
| SC02LI0150 |  | 02L Function Testing |  | 51d | 2008-03-09 | 2008-04-28 | CO02LI0130 FF+24d, CO02LI0140 SS, CO02LI0140 FF+6d |  |  | -17d | 0d | EBWK 7 Day No Holidays |  | 2006-07-29 | 150 | 4.5 | 0 |  |  | 02 | SC | I00 | 02L | I0 | I | C | S |  |  |  |  |  |  |  |  |  |  |
| SC03FT0130 |  | 03F Commission |  | 21d | 2008-03-09 | 2008-03-29 | CO03FT0110, SC03FT0120, SC01DT0130, SC03CT0120 FS+7d, SC03ET0120 FS+7d, SC03DT0120 FS+7d, SC01AT0120 FS+7d, SC01BT0120 FS+7d, SC01CT0120 FS+7d |  |  | -47d | 0d | EBWK 7 Day No Holidays |  | 2006-07-29 | 120 | 75.3 | 5.4 | CK200 | T0120 | 03 | SC | 000 | 03F | T0 | T | C | S | 18 | 21 | 28 | C3 | L2 |  |  |  |  |  |
| SC000T0100 |  | 020 Commission ISBL |  | 60d | 2008-03-30 | 2008-05-28 | SC03FT0130, PK020PR20S FF+20d, CO02HM0135 FS+276d |  |  | -47d | 0d | EBWK 7 Day No Holidays |  | 2006-07-29 |  | 75.3 | 33 |  |  | 02 | SC | G10 | 020 | GE | G | C | S | 40 | 60 | 75 | C3 | L3 |  |  |  |  |  |
| SC05AI0150 |  | 05A Function Testing |  | 32d | 2008-04-14 | 2008-05-15 | CO05AI0130 SS, CO05AI0130 FF+12d, CO05AI0140 SS, CO05AI0140 FF+6d |  |  | -34d | 25d | EBWK 7 Day No Holidays |  | 2006-07-29 | 150 | 0 | 0 | 05A | I0150 | 05 | SC | I00 | 05A | I0 | I | C | S |  |  |  |  |  |  |  |  |  |  |
| SC000T0105 |  | 020 Startup ISBL |  | 30d | 2008-06-10 | 2008-07-24 | SC02CT0120, SC02GT0120, SC02HT0120, SC02JT0120, SC02KT0120, SC02LT0120, SC02UT0120, SC02YT0120, SC03UT0120, SC01UT0120, SC02QT0120, SC02BT0120, SC03BT0120, SC01JT0120, SC02NT0120, SC02PT0120, SC02FT0120, SC01YT0120, SC02ET0120, SC02MT0120, SC02DT0120, SC02AT0120, SC01DT0120, SC03YT0120, SC01ET0120, SC01FT0120, SC05AT0120, SC03FT0120, SC04AT0120, CO01UDT110, CO02UDT110, CO03UDT110, CO02DT0110, SC000T0100, CO010K0130, CO010K0140, CO020K0100, CO030K0100 | 2008-06-10 | 2008-07-09 | -59d | 0d | EBWK 7 Day No Holidays |  | 2006-07-29 |  | 100 | 32.2 |  |  | 02 | SC | G10 | 020 | GE | G | CD | S | 30 | 45 | 60 | C1 | L3 |  | 30 |  |  |  |
| SC000T0110 |  | Performance Test Period |  | 90d | 2008-07-25 | 2008-10-22 | SC000T0105, SC05BT0120 |  |  | -59d | 0d | EBWK 7 Day No Holidays |  | 2006-07-29 |  | 100 | 70.6 |  |  | 00 | SC | 000 | 000 | GE | G | C | S | 61 | 90 | 120 | C1 | L3 |  |  | 90 | Gen | 20 |

| ID | WBS | Activity | Type | Duration | Start | Finish | Predecessors | Complete | Remaining | Planned start | Planned finish | Total float | Free float | Expected finish | Calendar | Resources | zData Date | Sequence | PCA Criticality Index | PCA Duration Sensitivity | User Defined Field 1 | User Definer Field 2 | EB02 - UNIT | EB01 - RESP | EB06 - WORK OP | EB03 - AREA | EB05 - DISCIPLINE | EB08 - TAG | EB04 - CLASS | EB11 - FLAG | EB12 - TEMP | EB00 - EPC | Optimistic Duration | Most Likely Duration | Pessimistic Duration | EB10 - KEY |
| --- | --- | --- | --- | --- | --- | --- | --- | --- | --- | --- | --- | --- | --- | --- | --- | --- | --- | --- | --- | --- | --- | --- | --- | --- | --- | --- | --- | --- | --- | --- | --- | --- | --- | --- | --- | --- |
|  | CK | **Home Office Construction** |  |  |  |  |  |  |  |  |  |  |  |  |  |  |  |  |  |  |  |  |  |  |  |  |  |  |  |  |  |  |  |  |  |  |
|  | CS | **Plant Services** |  |  |  |  |  |  |  |  |  |  |  |  |  |  |  |  |  |  |  |  |  |  |  |  |  |  |  |  |  |  |  |  |  |  |
|  | D0 | **Demolition** |  |  |  |  |  |  |  |  |  |  |  |  |  |  |  |  |  |  |  |  |  |  |  |  |  |  |  |  |  |  |  |  |  |  |
|  | PL | **Pipeline** |  |  |  |  |  |  |  |  |  |  |  |  |  |  |  |  |  |  |  |  |  |  |  |  |  |  |  |  |  |  |  |  |  |  |
|  | X0 | **Fire & Safety** |  |  |  |  |  |  |  |  |  |  |  |  |  |  |  |  |  |  |  |  |  |  |  |  |  |  |  |  |  |  |  |  |  |  |
|  | CN | **Project Completion** |  |  |  |  |  |  |  |  |  |  |  |  |  |  |  |  |  |  |  |  |  |  |  |  |  |  |  |  |  |  |  |  |  |  |
|  | 01 | **Offsites** |  |  | 2006-01-15 | 2008-02-27 |  |  |  |  |  |  |  |  |  |  |  |  |  |  |  |  |  |  |  |  |  |  |  |  |  |  |  |  |  |  |
|  | C0 | **Concrete / Piling** |  |  | 2006-04-27 | 2007-06-03 |  |  |  |  |  |  |  |  |  |  |  |  |  |  |  |  |  |  |  |  |  |  |  |  |  |  |  |  |  |  |
| CO01GC0150 |  | 01G Form, Pour, Strip Fnd - Control Building |  | 48d | 2006-04-27 A | 2006-05-02 A | EM01GCV164 FS+30d, CO000A0110 SS | 100% |  | 2006-06-03 | 2006-07-29 |  |  |  | EBWK 6 Day Egypt Holidays |  | 2006-07-29 | 150 | 0 | 0 | 01G | C0150 | 01 | CO | 1C1 | 01G | C0 | 2601K | C | PS | L1 | C |  |  |  |  |
| WO010C0100 |  | 010 Concrete & Excavation | WBS summary | 331d | 2006-04-27 A | 2007-06-03 | EK000YA000 | 67% | 110d | 2006-04-30 | 2007-06-17 | 149d | 560d |  | EBWK 6 Day Egypt Holidays | Concrete and Paving - Construction [266219 h] | 2006-07-29 | C00 | 0 | 0 | 01B | C0C00 | 01 | CO | 1C1 | 010 | C0 |  | C | WC |  | C |  |  |  |  |
| CO01DC0150 |  | 01D Form, Pour, Strip Fnd - 2101-U (Cooling Tower) |  | 84d | 2006-04-30 A | 2006-10-20 A | XE000K0110 SS, EM01DCV164 SS, CO000K0110 SS, EM01DCV113 SS | 100% |  | 2006-04-30 | 2006-08-05 |  |  |  | EBWK 6 Day Egypt Holidays |  | 2006-07-29 | 150 | 1.1 | 0 | 01D | C0150 | 01 | CO | 1C1 | 01D | C0 | 2101U | C | PS |  | C | 75 | 84 | 90 |  |
| CO01BC0160 |  | 01B Form, Pour, Strip Fnd - 2001-FB (Water Storage Tank) |  | 24d | 2006-05-20 A | 2006-07-31 A | CO000K0108 SS, EM01BCV226 FF+12d | 100% |  | 2006-05-20 | 2006-06-17 |  |  |  | EBWK 6 Day Egypt Holidays |  | 2006-07-29 | 160 | 0 | 0 | 01B | C0160 | 01 | CO | 1C1 | 01B | C0 | 2001FB | C | PS | X | C |  |  |  | T |
| CO01BC0150 |  | 01B Form, Pour, Strip Fnd - 2001-FA (Water Storage Tank) |  | 24d | 2006-05-28 A | 2006-08-14 A | XE000K0110, CO000K0108 SS, EM01BCV226 | 100% |  | 2006-06-17 | 2006-07-13 |  |  |  | EBWK 6 Day Egypt Holidays |  | 2006-07-29 | 150 | 0 | 0 | 01B | C0150 | 01 | CO | 1C1 | 01B | C0 | 2001FA | C | PS | X | C |  |  |  | T |
| CO01YC0140 |  | 01Y Form Pour Strip Fnds - Pipe Rack |  | 60d | 2006-07-13 A | 2006-11-12 A | EM01YCV133, CO000K0110 SS | 100% |  | 2006-07-13 | 2006-09-20 |  |  |  | EBWK 6 Day Egypt Holidays |  | 2006-07-29 | 140 | 0 | 0 | 01Y | C0140 | 01 | CO | 1C1 | 01Y | C0 |  | C | PS |  | C |  |  |  |  |
| CO01BC0140 |  | 01B Form Pour Strip Fnds - Sleepers to Evap Pond |  | 36d | 2006-09-09 A | 2007-02-26 | CO01BC0150, EM01BCV133 FS+7d, CO01YC0140 SS+15d | 25% | 27d | 2006-10-31 | 2006-12-11 | 148d | 0d | 2007-02-26 | EBWK 6 Day Egypt Holidays |  | 2006-07-29 | 140 | 0 | 0 | 01B | C0140 | 01 | CO | 1C1 | 01B | C0 |  | C |  |  | C |  |  |  |  |
| CO01BC0110 |  | 01B Form, Pour, Strip Fnds - Major Fnds Gen'l |  | 30d | 2006-09-23 A | 2006-11-01 A | XE000K0110, EM01BCV164, CO000K0110 SS | 100% |  | 2006-09-23 | 2006-11-16 |  |  |  | EBWK 6 Day Egypt Holidays |  | 2006-07-29 | 110 | 0 | 0 | 01B | C0110 | 01 | CO | 1C1 | 01B | C0 |  | C |  |  | C |  |  |  |  |
| CO01DC0140 |  | 01D Form Pour Strip Fnds - Sleepers |  | 30d | 2006-10-19 A | 2006-12-02 A | CO01DC0150 FF, EM01DCV133 FS+30d | 100% |  | 2007-04-03 | 2007-05-07 |  |  |  | EBWK 6 Day Egypt Holidays |  | 2006-07-29 | 140 | 0 | 0 | 01D | C0140 | 01 | CO | 1C1 | 01D | C0 |  | C |  |  | C |  |  |  |  |
| CO01BC0120 |  | 01B Form, Pour, Strip Fnds - Misc Fnds |  | 12d | 2006-11-20 A | 2007-02-05 | CO01BC0110, EM01BCV166 FS+20d, EM01BCV167 | 25% | 9d | 2007-03-21 | 2007-04-03 | 210d | 0d | 2007-02-05 | EBWK 6 Day Egypt Holidays |  | 2006-07-29 | 120 | 0 | 0 | 01B | C0120 | 01 | CO | 1C2 | 01B | C0 |  | C |  |  | C |  |  |  |  |
| CO01DC0110 |  | 01D Form, Pour, Strip Fnds - Major Fnds Gen'l |  | 36d | 2006-12-03 A | 2007-05-13 | XE000K0110, EM01DCV164 FS+30d, CO01DU4120, EM01DCV113 FS+30d |  | 36d | 2007-03-28 | 2007-05-08 | 49d | 0d |  | EBWK 6 Day Egypt Holidays |  | 2006-07-29 | 110 | 0 | 0 | 01D | C0110 | 01 | CO | 1C1 | 01D | C0 |  | C |  |  | C |  |  |  |  |
| CO01AC0120 |  | 01A Form, Pour, Strip Fnds - Misc Fnds & Sumps... |  | 6d | 2006-12-05 A | 2007-02-08 | CO000K0110 |  | 12d | 2007-06-11 | 2007-06-17 | 247d | 0d | 2007-02-08 | EBWK 6 Day Egypt Holidays |  | 2006-07-29 | 120 | 0 | 0 | 01A | C0120 | 01 | CO | 1C2 | 01A | C0 |  | C |  |  | C |  |  |  |  |
| CO01HC0110 |  | 01H Form, Pour, Strip Piers - Substation Building |  | 36d | 2007-01-27 | 2007-03-08 | XE000K0110, EM01HCV164 FS+30d, CO000K0110 SS+72d |  |  |  |  | 112d | 0d |  | EBWK 6 Day Egypt Holidays |  | 2006-07-29 | 110 | 0 | 0 | 01H | C0110 | 01 | CO | 1C1 | 01H | C0 |  | C | PS |  | C |  |  |  |  |
| CO01HC0140 |  | 01H Form Pour Strip Fnds - Transformers & Generator |  | 24d | 2007-03-03 | 2007-03-29 | EM01HCV128 FS+30d, CO01HC0110 SS+18d, CO01HC0110 FF+18d, CO01HU3110 FF |  |  |  |  | 116d | 0d |  | EBWK 6 Day Egypt Holidays |  | 2006-07-29 | 140 | 0 | 0 | 01H | C0140 | 01 | CO | 1C1 | 01H | C0 |  | C |  |  | C |  |  |  |  |
| CO01CC0110 |  | 01C Form, Pour, Strip Fnds - Major Fnds Gen'l |  | 24d | 2007-03-10 | 2007-04-05 | XE000K0110, EM01CCV164 FS+30d, CO000K0110 SS+72d, EM01CCV190 FS+30d |  |  |  |  | 117d | 0d |  | EBWK 6 Day Egypt Holidays |  | 2006-07-29 | 110 | 0 | 0 | 01C | C0110 | 01 | CO | 1C1 | 01C | C0 |  | C |  |  | C |  |  |  |  |
| CO01HC0120 |  | 01H Form, Pour, Strip Fnds - Misc Fnds |  | 12d | 2007-03-31 | 2007-04-12 | CO01HC0110, EM01HCV166 FS+20d, EM01HCV167, CO01HC0140 |  |  |  |  | 176d | 143d |  | EBWK 6 Day Egypt Holidays |  | 2006-07-29 | 120 | 0 | 0 | 01H | C0120 | 01 | CO | 1C2 | 01H | C0 |  | C |  |  | C |  |  |  |  |
| CO01CC0120 |  | 01C Form, Pour, Strip Fnds - Misc Fnds |  | 18d | 2007-04-07 | 2007-04-26 | CO01CC0110, CO01CU4120, EK000CV045, EM01CPI136 S1+5d, EM01CPI132 S1, EM01CPI136 S2+5d, EM01CPI136 FF+5d, EM01CPI132 S2, EM01CPI132 FF, EM01CCV190 FS+30d, EM01CCV164 FS+30d |  |  |  |  | 160d | 0d |  | EBWK 6 Day Egypt Holidays |  | 2006-07-29 | 120 | 0 | 0 | 01C | C0120 | 01 | CO | 1C2 | 01C | C0 |  | C |  |  | C |  |  |  |  |
| CO01DC0120 |  | 01D Form, Pour, Strip Fnds - Misc Fnds |  | 18d | 2007-05-14 | 2007-06-03 | CO01DC0110, EM01DCV166 FS+20d, EM01DCV167 |  |  |  |  | 72d | 0d |  | EBWK 6 Day Egypt Holidays |  | 2006-07-29 | 120 | 0 | 0 | 01D | C0120 | 01 | CO | 1C2 | 01D | C0 |  | C |  |  | C |  |  |  |  |

| ID | WBS | Activity | Type | Duration | Start | Finish | Predecessors | Complete | Remaining | Planned start | Planned finish | Total float | Free float | Constraint | Expected finish | Calendar | Resources | zData Date | Sequence | PCA Criticality Index | PCA Duration Sensitivity | User Defined Field 1 | User Definer Field 2 | EB02 - UNIT | EB01 - RESP | EB06 - WORK OP | EB03 - AREA | EB05 - DISCIPLINE | EB04 - CLASS | EB00 - EPC | EB11 - FLAG | EB08 - TAG | EB12 - TEMP | EB19 - System | EB09 - IPMS | user_integer2 | user_number1 | EB14 - RISK |
| --- | --- | --- | --- | --- | --- | --- | --- | --- | --- | --- | --- | --- | --- | --- | --- | --- | --- | --- | --- | --- | --- | --- | --- | --- | --- | --- | --- | --- | --- | --- | --- | --- | --- | --- | --- | --- | --- | --- |
|  | C1 | **Concrete Paving** |  |  | 2007-03-10 | 2007-08-07 |  |  |  |  |  |  |  |  |  |  |  |  |  |  |  |  |  |  |  |  |  |  |  |  |  |  |  |  |  |  |  |  |
| CO01YC0130 |  | 01Y Install Paving |  | 18d | 2007-03-10 | 2007-03-29 | CO01YU3110 |  |  |  |  | 134d | 71d |  |  | EBWK 6 Day Egypt Holidays |  | 2006-07-29 | 130 | 0 | 0 | 01Y | C0130 | 01 | CO | 1C3 | 01Y | C0 | C | C |  |  |  |  |  |  |  |  |
| WO010C0110 |  | 010 Concrete Paving | WBS summary | 130d | 2007-03-10 | 2007-08-07 | EK000YA000 |  |  |  |  | 188d | 504d |  |  | EBWK 6 Day Egypt Holidays | Concrete and Paving - Construction [4580.1 h] | 2006-07-29 | C00 | 0 | 0 | 01B | C0C00 | 01 | CO | 1C3 | 010 | C0 | C | C | WC |  |  |  |  |  |  |  |
| CO01EC0135 |  | 01E Install Paving - Guard House |  | 12d | 2007-04-03 | 2007-04-16 | CO01EA0130 |  |  |  |  | 285d | 105d |  |  | EBWK 6 Day Egypt Holidays |  | 2006-07-29 | 130 | 0 | 0 | 01E | C0130 | 01 | CO | 1C3 | 01E | C0 | C | C |  |  |  |  |  |  |  |  |
| CO01CC0130 |  | 01C Install Paving |  | 12d | 2007-04-28 | 2007-05-10 | CO01CC0120, CO01CU3110 |  |  |  |  | 160d | 41d |  |  | EBWK 6 Day Egypt Holidays |  | 2006-07-29 | 130 | 0 | 0 | 01C | C0130 | 01 | CO | 1C3 | 01C | C0 | C | C |  |  |  |  |  |  |  |  |
| CO01FC0135 |  | 01F Install Paving - Mosque |  | 18d | 2007-05-29 | 2007-06-18 | CO01FA0130 |  |  |  |  | 203d | 51d |  |  | EBWK 6 Day Egypt Holidays |  | 2006-07-29 | 130 | 0 | 0 | 01F | C0130 | 01 | CO | 1C3 | 01F | C0 | C | C |  | 2603K |  |  |  |  |  |  |
| CO01DC0130 |  | 01D Install Paving |  | 12d | 2007-06-04 | 2007-06-17 | CO01DC0120, CO01DU3110 |  |  |  |  | 72d | 12d |  |  | EBWK 6 Day Egypt Holidays |  | 2006-07-29 | 130 | 0 | 0 | 01D | C0130 | 01 | CO | 1C3 | 01D | C0 | C | C |  |  |  |  |  |  |  |  |
| CO01GC0130 |  | 01G Install Paving - Control Building |  | 12d | 2007-07-25 | 2007-08-07 | CO01GA0110, CO01EU4130, EK000CV045, EM01GCV160 FS+10d, CO01GU3110 |  |  |  |  | 70d | 105d |  |  | EBWK 6 Day Egypt Holidays |  | 2006-07-29 | 130 | 0 | 0 | 01G | C0130 | 01 | CO | 1C3 | 01G | C0 | C | C |  | 2601K | L1 |  |  |  |  |  |
|  | U4 | **U/G Piping** |  |  | 2006-09-24 | 2007-04-25 |  |  |  |  |  |  |  |  |  |  |  |  |  |  |  |  |  |  |  |  |  |  |  |  |  |  |  |  |  |  |  |  |
| CO01UP0150 |  | 01U LB Pipe Erection (Firewater Piping) |  | 144d | 2006-09-24 A | 2007-03-08 | CK01UU4150 FF+18d, CO000K0100, EM01UPI200 | 80% | 29d | 2006-10-18 | 2007-04-18 | 212d | 0d |  | 2007-02-28 | EBWK 6 Day Egypt Holidays |  | 2006-07-29 | 130 | 0 | 0 | 01D | P0130 | 01 | CO | 1U2 | 01U | U4 | U | C | PS |  |  | FW |  |  |  |  |
| WO010U4100 |  | 010 U/G Piping Installation | WBS summary | 150d | 2006-09-24 A | 2007-04-25 | EK000YA000 | 53% | 70d | 2006-10-18 | 2007-04-25 | 171d | 593d |  |  | EBWK 6 Day Egypt Holidays | U/G Piping - Construction [126743 h] | 2006-07-29 | U40 | 0 | 0 | 01B | U4U40 | 01 | CO | 1U2 | 010 | U4 | U | C | WC |  |  |  | F |  |  |  |
| CO01JP0230 |  | 01J U/G Pipe Erection - Piping to Corridor |  | 24d | 2007-02-28 | 2007-03-28 | XE000OW350 |  |  |  |  | 160d | 52d |  |  | EBWK 6 Day Egypt Holidays |  | 2006-07-29 | 130 | 0 | 0 | 01Y | P0130 | 01 | CO | 1U2 | 01J | U4 | U | C | C |  |  |  |  | 12 | 0.00208333 | 21 |
| CO01BU4120 |  | 01B U/G Piping Installation |  | 34d | 2007-03-01 | 2007-04-09 | CO01BC0110 FF, CK01BU4110 FS+30d |  |  |  |  | 173d | 0d |  |  | EBWK 6 Day Egypt Holidays |  | 2006-07-29 | 120 | 0 | 0 | 01B | U4120 | 01 | CO | 1U2 | 01B | U4 | U | C | PS |  |  |  |  |  |  |  |
| CO01DU4120 |  | 01D U/G Piping Installation |  | 27d | 2007-03-01 | 2007-04-01 | CK01DU4110 FS+30d, EK020PI014, EK010PI014, EK030PI014, EK000CK005, EK000CV165, EK000CV040, CO000C0150 SS |  |  |  |  | 49d | 0d |  |  | EBWK 6 Day Egypt Holidays |  | 2006-07-29 | 120 | 0 | 0 | 01D | U4120 | 01 | CO | 1U2 | 01D | U4 | U | C | PS |  |  |  |  |  |  |  |
| CO01EU4130 |  | 01E/F/G U/G Piping Installation (to Bldg Stub Outs) |  | 48d | 2007-03-01 | 2007-04-25 | CK01EU4120, CO000A0110 SS+30d, CO01GC0150 SS+18d |  |  |  |  | 147d | 0d | start on or after 2007-03-01 |  | EBWK 6 Day Egypt Holidays | U/G Piping - Construction | 2006-07-29 | 120 | 0 | 0 | 01E | U4120 | 01 | CO | 1U2 | 01G | U4 | U | C | C |  | L1 |  |  |  |  |  |
| CO01CU4120 |  | 01C U/G Piping Installation |  | 12d | 2007-03-24 | 2007-04-05 | CO01CC0110 FF, CK01CU4110 FS+30d |  |  |  |  | 160d | 0d |  |  | EBWK 6 Day Egypt Holidays |  | 2006-07-29 | 120 | 0 | 0 | 01C | U4120 | 01 | CO | 1U2 | 01C | U4 | U | C | PS |  |  |  |  |  |  |  |
|  | U3 | **U/G Electrical** |  |  | 2007-01-27 | 2007-04-26 |  |  |  |  |  |  |  |  |  |  |  |  |  |  |  |  |  |  |  |  |  |  |  |  |  |  |  |  |  |  |  |  |
| CO01YU3110 |  | 01Y U/G Earthing Installation - Pipe Rack |  | 36d | 2007-01-27 | 2007-03-08 | CO01YC0140 SS+24d, EM000ELEH2 FS+30d |  |  |  |  | 134d | 0d |  |  | EBWK 6 Day Egypt Holidays |  | 2006-07-29 | 110 | 0 | 0 | 01Y | U3110 | 01 | CO | 1U3 | 01Y | U3 | U | C | C |  |  |  |  |  | 22 |  |
| WO010U3100 |  | 010 Install U/G Electrical | WBS summary | 78d | 2007-01-31 A | 2007-04-26 | EK000YA000 |  | 78d | 2007-01-27 | 2007-04-26 | 170d | 592d |  |  | EBWK 6 Day Egypt Holidays | U/G Piping - Construction [53574 h] | 2006-07-29 | U30 | 0 | 0 | 01B | U3U30 | 01 | CO | U30 | 010 | U3 | U | C | WC |  |  |  |  |  |  |  |
| CO01HU3110 |  | 01H U/G Earthing Installation |  | 12d | 2007-02-24 | 2007-03-08 | CO01HC0110 SS+24d, EM000ELEH2 FS+30d |  |  |  |  | 134d | 18d |  |  | EBWK 6 Day Egypt Holidays |  | 2006-07-29 | 110 | 0 | 0 | 01H | U3110 | 01 | CO | 1U3 | 01H | U3 | U | C | C |  |  |  |  |  | 23 |  |
| CO01DU3110 |  | 01D U/G Earthing Installation |  | 13d | 2007-04-02 | 2007-04-16 | CO01DC0110 SS+12d, EM000ELEH2 FS+30d |  |  |  |  | 113d | 41d |  |  | EBWK 6 Day Egypt Holidays |  | 2006-07-29 | 110 | 0 | 0 | 01D | U3110 | 01 | CO | 1U3 | 01D | U3 | U | C | C |  |  |  |  |  | 23 |  |
| CO01BU3110 |  | 01B U/G Earthing Installation |  | 17d | 2007-04-04 | 2007-04-23 | CO01BU4120 FF+12d, EM000ELEH2 FS+30d |  |  |  |  | 173d | 208d |  |  | EBWK 6 Day Egypt Holidays |  | 2006-07-29 | 110 | 0 | 0 | 01B | U3110 | 01 | CO | 1U3 | 01B | U3 | U | C | C |  |  |  |  |  | 0 |  |
| CO01CU3110 |  | 01C U/G Earthing Installation |  | 6d | 2007-04-14 | 2007-04-19 | CO01CU4120 FF+12d, EM000ELEH2 FS+30d |  |  |  |  | 166d | 6d |  |  | EBWK 6 Day Egypt Holidays |  | 2006-07-29 | 110 | 0 | 0 | 01C | U3110 | 01 | CO | 1U3 | 01C | U3 | U | C | C |  |  |  |  |  | 22 |  |
| CO01GU3110 |  | 01G U/G Earthing Installation |  | 12d | 2007-04-14 | 2007-04-26 | EM000ELEH2 FS+30d, CO01GC0150 SS+18d, CO01GA0110 SS+100d |  |  |  |  | 146d | 76d |  |  | EBWK 6 Day Egypt Holidays |  | 2006-07-29 | 110 | 0 | 0 | 01G | U3110 | 01 | CO | 1U3 | 01G | U3 | U | C | C |  | L1 |  |  |  | 22 |  |

Notes:
- CO01UP0150: P3 Activity Log Info: Plant L.O. thru start erection of pipe 58 / weeks
- CO01JP0230: P3 Activity Log Info: Plant L.O. thru start erection of pipe 58 / weeks
- CO01BU4120: P3 Activity Log Info: Need to tie to material / deliveries
- CO01DU4120: P3 Activity Log Info: Need to tie to material / deliveries
- CO01EU4130: P3 Activity Log Info: Need to tie to material / deliveries
- CO01CU4120: P3 Activity Log Info: Need to tie to material / deliveries
- CO01YU3110: P3 Activity Log Info: Need to tie to material / deliveries
- CO01HU3110: P3 Activity Log Info: Need to tie to material / deliveries
- CO01DU3110: P3 Activity Log Info: Need to tie to material / deliveries
- CO01BU3110: P3 Activity Log Info: Need to tie to material / deliveries
- CO01CU3110: P3 Activity Log Info: Need to tie to material / deliveries
- CO01GU3110: P3 Activity Log Info: Need to tie to material / deliveries

| ID | WBS | Activity | Type | Duration | Start | Finish | Predecessors | Complete | Remaining | Planned start | Planned finish | Total float | Free float | Expected finish | Calendar | Resources | zData Date | Sequence | PCA Criticality Index | PCA Duration Sensitivity | User Defined Field 1 | User Definer Field 2 | user_integer2 | user_number1 | EB02 - UNIT | EB01 - RESP | EB06 - WORK OP | EB03 - AREA | EB05 - DISCIPLINE | EB08 - TAG | EB04 - CLASS | EB11 - FLAG | EB12 - TEMP | EB00 - EPC | EB14 - RISK | EB07 - REQN | Optimistic Duration | Most Likely Duration | Pessimistic Duration |
| --- | --- | --- | --- | --- | --- | --- | --- | --- | --- | --- | --- | --- | --- | --- | --- | --- | --- | --- | --- | --- | --- | --- | --- | --- | --- | --- | --- | --- | --- | --- | --- | --- | --- | --- | --- | --- | --- | --- | --- |
|  | A0 | **Buildings** |  |  | 2006-12-11 | 2007-07-24 |  |  |  |  |  |  |  |  |  |  |  |  |  |  |  |  |  |  |  |  |  |  |  |  |  |  |  |  |  |  |  |  |  |
| CO01GA0110 |  | 01G Erect Control Building (Continuation w/ Design Rev) |  | 188d | 2006-12-11 A | 2007-07-24 | CO01GA0115, PK01GMU21Z FF, PK01FMU21Z FF | 18% | 154d | 2006-05-03 | 2006-12-28 | -14d | 0d | 2007-07-24 | EBWK 6 Day Egypt Holidays | Architectural - Construction | 2006-07-29 | 130 | 0 | 0 | 01G | E0130 | 192 | 0 | 01 | CO | 1A1 | 01G | A0 | 2601K | A | C | L1 | C | 02 |  |  |  |  |
| WO010A0100 |  | 010 Buildings | WBS summary | 356d | 2006-12-11 A | 2007-07-24 | EK000YA002 | 57% | 154d | 2006-05-03 | 2007-07-21 | 94d | 516d |  | EBWK 6 Day Egypt Holidays | Architectural - Construction [135876 h] | 2006-07-29 | 130 | 0 | 0 | 01G | E0130 | 192 |  | 01 | CO | 1A1 | 010 | A0 |  | A | WC |  | C |  |  |  |  |  |
| CO01EA0130 |  | 01E Erect Guard House |  | 24d | 2007-03-06 | 2007-04-02 | EK01EA0140 FS+12d |  |  |  |  | 191d | 0d |  | EBWK 6 Day Egypt Holidays | Architectural - Construction | 2006-07-29 | 120 | 0 | 0 | 01E | U4120 |  | 35 | 01 | CO | 1A1 | 01E | A0 |  | A | C |  | C |  |  |  |  |  |
| CO01FA0130 |  | 01F Erect Mosque |  | 72d | 2007-03-06 | 2007-05-28 | EK000YA000, EK01FA0140 FS+12d |  |  |  |  | 143d | 0d |  | EBWK 6 Day Egypt Holidays | Architectural - Construction | 2006-07-29 | 150 | 0 | 0 | 01F | M0150 |  | -96 | 01 | CO | 1A1 | 01F | A0 |  | A |  |  | C |  |  |  |  |  |
| CO01HA0110 |  | 01H Set 2610-K Electrical Power House |  | 18d | 2007-05-12 | 2007-06-02 | PK01HE001L, CO01HC0110 FS+18d |  |  |  |  | 76d | 25d |  | EBWK 6 Day Egypt Holidays |  | 2006-07-29 | 130 | 0 | 0 | 01H | E0130 |  | 0 | 01 | CO | 1A1 | 01H | A0 | 2610K | A | C |  | C |  |  |  |  |  |
| CO01CA0110 |  | 01C Erect - EDR Shelter |  | 18d | 2007-06-30 | 2007-07-21 | CO01CM0110 |  |  |  |  | 98d | 133d |  | EBWK 6 Day Egypt Holidays | Architectural - Construction | 2006-07-29 | 110 | 0 | 0 | 01C | M0110 |  | 22 | 01 | CO | 1A1 | 01C | A0 |  | A |  |  | C |  |  |  |  |  |
|  | S0 | **Structural / Misc. Steel** |  |  | 2007-04-05 | 2007-07-11 |  |  |  |  |  |  |  |  |  |  |  |  |  |  |  |  |  |  |  |  |  |  |  |  |  |  |  |  |  |  |  |  |  |
| CO01YS0110 |  | 01Y Erect Structural Steel - Pipe Rack |  | 48d | 2007-04-05 | 2007-05-30 | PO01YS0000 FS+30d, EM01YCV122 FS+30d, CO01YC0140 SS+36d |  |  |  |  | 39d | 0d |  | EBWK 6 Day Egypt Holidays |  | 2006-07-29 | 110 | 0 | 0 | 01Y | S0110 |  | 24 | 01 | CO | 1S1 | 01Y | S0 |  | S | C |  | C |  | B1040 |  |  |  |
| WO010S0100 |  | 010 Erect Steel | WBS summary | 84d | 2007-04-05 | 2007-07-11 | EK000YA000 |  |  |  |  | 94d | 527d |  | EBWK 6 Day Egypt Holidays | Structural Steel - Construction [11502.3 h] | 2006-07-29 | S00 | 0 | 0 | 01B | S0S00 |  |  | 01 | CO | 1S1 | 010 | S0 |  | S | WC |  | C |  |  |  |  |  |
| CO01BS0120 |  | 01B Erect Misc Steel |  | 24d | 2007-05-03 | 2007-05-30 | PO01BS0010 FS+30d |  |  |  |  | 86d | 13d |  | EBWK 6 Day Egypt Holidays |  | 2006-07-29 | 120 | 0 | 7.2 | 01B | S0120 |  | 15 | 01 | CO | 1S2 | 01B | S0 |  | S | C |  | C |  | B1040 | 20 | 24 | 26 |
| CO01YS0120 |  | 01Y Erect Misc Steel - Pipe Rack |  | 24d | 2007-05-24 | 2007-06-20 | CO01YS0110 SS+24d, CO01YS0110 FF+18d |  |  |  |  | 39d | 0d |  | EBWK 6 Day Egypt Holidays |  | 2006-07-29 | 120 | 0 | 0 | 01Y | S0120 |  | 24 | 01 | CO | 1S2 | 01Y | S0 |  | S | C |  | C |  | B1040 |  |  |  |
| CO01DS0120 |  | 01D Erect Misc Steel |  | 24d | 2007-06-04 | 2007-07-01 | CO01DM0130, PO01DS0010 FS+30d, PO01DS0000 FS+30d |  |  |  |  | 61d | 0d |  | EBWK 6 Day Egypt Holidays |  | 2006-07-29 | 120 | 1.1 | 3.6 | 01D | S0120 |  | 27 | 01 | CO | 1S2 | 01D | S0 |  | S | C |  | C |  | B1040 | 20 | 24 | 29 |
| CO01CS0120 |  | 01C Erect Misc Steel |  | 12d | 2007-06-14 | 2007-06-27 | PO01CS0010 FS+30d |  |  |  |  | 106d | 0d |  | EBWK 6 Day Egypt Holidays |  | 2006-07-29 | 120 | 0 | 0 | 01C | S0120 |  | 6 | 01 | CO | 1S2 | 01C | S0 |  | S | C |  | C |  | B1040 |  |  |  |
| CO01HS0110 |  | 01H Erect Structural Steel - Stairs & Platform |  | 24d | 2007-06-14 | 2007-07-11 | PO01HS0010 FS+30d, CO01HA0110 FF+10d |  |  |  |  | 51d | 0d |  | EBWK 6 Day Egypt Holidays |  | 2006-07-29 | 110 | 0 | 0 | 01H | S0110 |  | 0 | 01 | CO | 1S1 | 01H | S0 |  | S | C |  | C |  | B1040 |  |  |  |
|  | M0 | **Mechanical Equipment** |  |  | 2006-09-04 | 2007-10-01 |  |  |  |  |  |  |  |  |  |  |  |  |  |  |  |  |  |  |  |  |  |  |  |  |  |  |  |  |  |  |  |  |  |
| CO01DM0130 |  | 01D Erect 2101-U Cooling Tower |  | 124d | 2006-09-04 A | 2007-06-03 | CO01DC0150 SS, PK01DMU61Z, ZZ1020 | 11% | 110d | 2006-09-04 | 2007-02-22 | 61d | 0d | 2007-06-03 | EBWK 6 Day Egypt Holidays |  | 2006-07-29 | 130 | 1.1 | 1 | 01D | M0130 |  | 47 | 01 | CO | 1M1 | 01D | M0 | 2101U | M | PS |  | C |  |  | 114 | 124 | 129 |
| WO010M0100 |  | 010 Major Equipment | WBS summary | 305d | 2006-09-04 A | 2007-10-01 | EK000YA000 | 33% | 205d |  |  | 54d | 465d |  | EBWK 6 Day Egypt Holidays | Major Equipment - Construction [89693.6 h] | 2006-07-29 | M00 | 0 | 0 | 01A | M0M00 |  |  | 01 | CO | 1M1 | 010 | M0 |  | M | WC |  | C |  |  |  |  |  |
| CO01BM0110 |  | 01B Set Static Equipment |  | 24d | 2007-04-30 | 2007-05-27 | CO01BC0110, PK000MU31O FS+30d |  |  |  |  | 71d | 39d |  | EBWK 6 Day Egypt Holidays |  | 2006-07-29 | 110 | 0 | 0 | 01B | M0110 |  | -2.99791666 | 01 | CO | 1M1 | 01B | M0 |  | M |  |  | C |  |  |  |  |  |
| CO01CM0110 |  | 01C Set Static Equipment - EDR Equipment |  | 48d | 2007-05-05 | 2007-06-30 | CO01CC0110, PK01BMU30Z FS+30d |  |  |  |  | 93d | 0d |  | EBWK 6 Day Egypt Holidays |  | 2006-07-29 | 110 | 0 | 0 | 01C | M0110 |  | 22 | 01 | CO | 1M1 | 01C | M0 |  | M |  |  | C |  |  |  |  |  |
| CO01CM0115 |  | 01C Set Rotating Equipment - EDR Equipment |  | 48d | 2007-05-05 | 2007-06-30 | PK01BMU30Z FS+30d, CO01CC0110 |  |  |  |  | 99d | 6d |  | EBWK 6 Day Egypt Holidays |  | 2006-07-29 | 110 | 0 | 0 | 01C | M0110 |  | 22 | 01 | CO | 1M1 | 01C | M0 |  | M |  |  | C |  |  |  |  |  |
| CO01DM0110 |  | 01D Set Static Equipment |  | 36d | 2007-05-14 | 2007-06-24 | CO01DC0110 |  |  |  |  | 49d | 15d |  | EBWK 6 Day Egypt Holidays |  | 2006-07-29 | 110 | 0 | 0 | 01D | M0110 |  | -19 | 01 | CO | 1M1 | 01D | M0 |  | M |  |  | C |  |  |  |  |  |
| CO01HM0110 |  | 01H Set Static Equipment - 2303-J Emergency Pwr Gen. |  | 36d | 2007-05-19 | 2007-06-30 | CO01HC0140 FS+12d, PK01HMJ73Z, PK000MJ71Z |  |  |  |  | 86d | 53d |  | EBWK 6 Day Egypt Holidays |  | 2006-07-29 | 110 | 0 | 0 | 01H | M0110 |  | -14 | 01 | CO | 1M1 | 01H | M0 | 2303J | M |  |  | C |  |  |  |  |  |
| CO01BM0150 |  | 01B Set Rotating Equipment |  | 36d | 2007-05-31 | 2007-07-11 | PK01BMJ39Z, PK01BMJ33Z, PK01BMJ36Z, CO01BC0110 |  |  |  |  | 32d | 0d |  | EBWK 6 Day Egypt Holidays |  | 2006-07-29 | 150 | 6.4 | 0 | 01B | M0150 |  | -30 | 01 | CO | 1M1 | 01B | M0 |  | M |  |  | C |  |  | 20 | 24 | 29 |
| CO01DM0150 |  | 01D Set Rotating Equipment |  | 36d | 2007-05-31 | 2007-07-11 | PK03FMU32Z, PK01DMJ33Z, CO01DC0110 |  |  |  |  | 34d | 0d |  | EBWK 6 Day Egypt Holidays |  | 2006-07-29 | 150 | 0 | 0 | 01D | M0150 |  | -19 | 01 | CO | 1M1 | 01D | M0 |  | M |  |  | C |  |  |  |  |  |
| CO01AM0150 |  | 01A Install Spray Devices |  | 6d | 2007-09-19 | 2007-10-01 | CO01AK0160 |  |  |  |  | 54d | 0d |  | EBWK 6 Day Egypt Holidays |  | 2006-07-29 | 150 | 0 | 0 | 01A | M0150 |  | 35 | 01 | CO | 1M1 | 01A | M0 |  | M |  |  | C |  |  |  |  |  |

Notes:
- CO01EA0130: P3 Activity Log Info: Need to tie to material / deliveries

| ID | WBS | Activity | Type | Duration | Start | Finish | Predecessors | Total float | Free float | Calendar | Resources | zData Date | Sequence | PCA Criticality Index | PCA Duration Sensitivity | User Defined Field 1 | User Definer Field 2 | user_integer2 | user_number1 | EB02 - UNIT | EB01 - RESP | EB06 - WORK OP | EB03 - AREA | EB05 - DISCIPLINE | EB04 - CLASS | EB11 - FLAG | EB00 - EPC | EB14 - RISK | EB12 - TEMP | Optimistic Duration | Most Likely Duration | Pessimistic Duration | EB08 - TAG |
| --- | --- | --- | --- | --- | --- | --- | --- | --- | --- | --- | --- | --- | --- | --- | --- | --- | --- | --- | --- | --- | --- | --- | --- | --- | --- | --- | --- | --- | --- | --- | --- | --- | --- |
|  | P0 | **A/G Piping** |  |  | 2007-05-31 | 2007-11-04 |  |  |  |  |  |  |  |  |  |  |  |  |  |  |  |  |  |  |  |  |  |  |  |  |  |  |  |
| CO01YP0130 |  | 01Y LB Pipe Erection - Pipe Rack |  | 48d | 2007-05-31 | 2007-07-25 | CK01YP0110, CO01YV1110 FF+10d, PK000PTA0K, CO01YS0110, EM01YPI138 FS+30d, EM01YSY272 FS+30d, CO01YS0120 SS+6d, CO01YS0120 FF+6d | 39d | 0d | EBWK 6 Day Egypt Holidays |  | 2006-07-29 | 130 | 0 | 0 | 01Y | P0130 | 48 | 24 | 01 | CO | 1P2 | 01Y | P0 | P | PS | C | 21 |  |  |  |  |  |
| WO010P0100 |  | 010 Above Ground Pipe | WBS summary | 116d | 2007-05-31 | 2007-11-04 | EK000YA000 | 95d | 447d | EBWK 6 Day Egypt Holidays | Aboveground Pipe - Construction [139793 h] | 2006-07-29 | P00 | 0 | 0 | 01A | P0P00 |  |  | 01 | CO | P00 | 010 | P0 | P | WC | C |  |  |  |  |  |  |
| CO01YP0140 |  | 01Y SB Pipe Erection - Pipe Rack |  | 48d | 2007-06-28 | 2007-08-22 | CO01YP0130 SS+24d, CO01YP0130 FF+24d, PK000PIA1P FF+72d | 39d | 0d | EBWK 6 Day Egypt Holidays |  | 2006-07-29 | 140 | 0 | 0 | 01Y | P0140 | 48 | 24 | 01 | CO | 1P3 | 01Y | P0 | P | C | C | 21 |  |  |  |  |  |
| CO01CP0130 |  | 01C LB Pipe Erection |  | 18d | 2007-07-07 | 2007-07-28 | CO01CM0110 FF+24d, CK01CP0110, CO01CV1110 FF+10d, PK000PTA0K, EM01CPI138 FS+30d, CO01CS0120 SS+6d, CO01CS0120 FF+6d, CO01CM0115 | 93d | 0d | EBWK 6 Day Egypt Holidays |  | 2006-07-29 | 130 | 0 | 0 | 01C | P0130 | 18 | 22 | 01 | CO | 1P2 | 01C | P0 | P | C | C | 21 | L4 |  |  |  |  |
| CO01BP0130 |  | 01B LB Pipe Erection |  | 68d | 2007-07-12 | 2007-10-21 | CO01BM0110, CO01BM0150, CK01BP0110, CO01BV1110 FF+10d, CO01BC0140, CO01BC0120 FF+24d, PK000PTA0K, CO01BM0130 FF+6d, CO01BM0140 FF+6d, EM01BPI138 FS+30d, EM01BSY272 FS+30d, EM01CSY272 FS+30d, CO01BS0120 SS+6d, CO01BS0120 FF+6d | 32d | 0d | EBWK 6 Day Egypt Holidays |  | 2006-07-29 | 130 | 6.4 | 4.5 | 01B | P0130 | 68 | -30 | 01 | CO | 1P2 | 01B | P0 | P | C | C | 21 | L4 | 63 | 68 | 73 |  |
| CO01DP0130 |  | 01D LB Pipe Erection |  | 54d | 2007-07-12 | 2007-09-12 | CO01DM0110, CO01DM0150, CO01DM0130 FF+36d, CK01DP0110, CO01DV1110 FF+10d, PK000PTA0K, CO01DC0140, EM01DPI138 FS+30d, EM01DSY272 FS+30d, CO01DS0120 SS+6d, CO01DS0120 FF+6d | 34d | 0d | EBWK 6 Day Egypt Holidays |  | 2006-07-29 | 130 | 0 | 3.7 | 01D | P0130 | 54 | -19 | 01 | CO | 1P2 | 01D | P0 | P | C | C | 21 | L4 | 45 | 54 | 60 |  |
| CO01CP0140 |  | 01C SB Pipe Erection |  | 18d | 2007-07-14 | 2007-08-04 | CO01CP0130 SS+6d, CO01CP0130 FF+6d, PK000PIA1P FF+72d | 93d | 0d | EBWK 6 Day Egypt Holidays |  | 2006-07-29 | 140 | 0 | 0 | 01C | P0140 | 18 | 22 | 01 | CO | 1P3 | 01C | P0 | P | C | C | 21 |  |  |  |  |  |
| CO01BP0140 |  | 01B SB Pipe Erection |  | 68d | 2007-07-19 | 2007-10-28 | CO01BP0130 SS+6d, CO01BP0130 FF+6d, PK000PIA1P FF+72d | 32d | 0d | EBWK 6 Day Egypt Holidays |  | 2006-07-29 | 140 | 6.4 | 2.1 | 01B | P0140 | 68 | -30 | 01 | CO | 1P3 | 01B | P0 | P | C | C | 21 |  | 63 | 68 | 73 |  |
| CO01DP0140 |  | 01D SB Pipe Erection |  | 54d | 2007-07-19 | 2007-09-26 | CO01DP0130 SS+6d, CO01DP0130 FF+6d, PK000PIA1P FF+72d | 34d | 0d | EBWK 6 Day Egypt Holidays |  | 2006-07-29 | 140 | 0 | 0 | 01D | P0140 | 54 | -19 | 01 | CO | 1P3 | 01D | P0 | P | C | C | 21 |  | 45 | 54 | 60 |  |
| CO01CP0150 |  | 01C Punchlist / Test Piping |  | 9d | 2007-07-31 | 2007-08-11 | CO01CP0140 SS, CO01CP0140 FF+6d, PO000P0020 FF+30d | 96d | 0d | EBWK 6 Day Egypt Holidays |  | 2006-07-29 | 150 | 0 | 0 | 01C | P0150 |  | 22 | 01 | CO | 1P4 | 01C | P0 | P | C | C |  |  |  |  |  |  |
| CO01YP0150 |  | 01Y Punchlist / Test Piping - Pipe Rack |  | 24d | 2007-08-02 | 2007-08-29 | CO01YP0140 SS, CO01YP0140 FF+6d, PO000P0020 FF+30d | 133d | 0d | EBWK 6 Day Egypt Holidays |  | 2006-07-29 | 150 | 0 | 0 | 01Y | P0150 |  | 24 | 01 | CO | 1P4 | 01Y | P0 | P | C | C |  |  |  |  |  |  |
| CO01DP0150 |  | 01D Punchlist / Test Piping |  | 27d | 2007-08-27 | 2007-10-10 | CO01DP0140 SS, CO01DP0140 FF+6d, PO000P0020 FF+30d | 34d | 0d | EBWK 6 Day Egypt Holidays |  | 2006-07-29 | 150 | 0 | 0 | 01D | P0150 |  | -19 | 01 | CO | 1P4 | 01D | P0 | P | C | C |  |  | 20 | 27 | 30 |  |
| CO01BP0150 |  | 01B Punchlist / Test Piping |  | 34d | 2007-09-04 | 2007-11-04 | CO01BP0140 SS, CO01BP0140 FF+6d, PO000P0020 FF+30d | 32d | 0d | EBWK 6 Day Egypt Holidays |  | 2006-07-29 | 150 | 1.6 | 1.2 | 01B | P0150 |  | -30 | 01 | CO | 1P4 | 01B | P0 | P | C | C |  |  | 29 | 34 | 39 |  |
| CO01AP0130 |  | 01A LB Pipe Erection |  | 12d | 2007-10-03 | 2007-10-28 | CO01AM0150, CK01AP0110, CO01AV1110, CO01AC0120, EM01API138 FS+30d, EM01ASY272 FS+30d | 54d | 0d | EBWK 6 Day Egypt Holidays |  | 2006-07-29 | 130 | 0 | 0 | 01A | P0130 | 3 | 35 | 01 | CO | 1P2 | 01A | P0 | P | C | C |  |  |  |  |  |  |
| CO01AP0150 |  | 01A Punchlist / Test Piping |  | 3d | 2007-10-29 | 2007-10-31 | PO000P0020 FF+30d, CO01AP0130 | 57d | 0d | EBWK 6 Day Egypt Holidays |  | 2006-07-29 | 150 | 0 | 0 | 01A | P0150 |  | 35 | 01 | CO | 1P4 | 01A | P0 | P | C | C |  |  |  |  |  |  |
|  | E0 | **A/G Electrical** |  |  | 2007-06-16 | 2007-11-04 |  |  |  |  |  |  |  |  |  |  |  |  |  |  |  |  |  |  |  |  |  |  |  |  |  |  |  |
| CO01BE0110 |  | 01B Lighting JB's, Stands, Tray & Cable |  | 36d | 2007-06-16 | 2007-07-26 | CO01BS0120, PO000E0010 FS+30d, EM000ELEJ2 FF+30d | 105d | 0d | EBWK 6 Day Egypt Holidays |  | 2006-07-29 | 110 | 0 | 0 | 01B | E0110 |  | 15 | 01 | CO | 1E2 | 01B | E0 | E | C | C |  |  | 33 | 36 | 38 |  |
| CO01EE0110 |  | 01E Lighting JB's, Stands, Tray & Cable |  | 36d | 2007-06-16 | 2007-07-26 | PO000E0010 FS+30d, CO01EA0130 | 180d | 0d | EBWK 6 Day Egypt Holidays |  | 2006-07-29 | 110 | 0 | 0 | 01G | E0110 |  | 26 | 01 | CO | 1E2 | 01E | E0 | E | C | C |  |  |  |  |  |  |
| CO01FE0110 |  | 01F Lighting JB's, Stands, Tray & Cable |  | 36d | 2007-06-16 | 2007-07-26 | PO000E0010 FS+30d, CO01FA0130 | 152d | 0d | EBWK 6 Day Egypt Holidays |  | 2006-07-29 | 110 | 0 | 0 | 01G | E0110 |  | 36 | 01 | CO | 1E2 | 01F | E0 | E | C | C |  |  |  |  |  |  |
| CO01GE0130 |  | 01G Power Tray, Cable, Terminations |  | 24d | 2007-06-16 | 2007-07-12 | CO01GA0110 SS+96d, PO000E0010 FS+30d | 92d | 127d | EBWK 6 Day Egypt Holidays |  | 2006-07-29 | 130 | 0 | 0 | 01G | E0130 |  | 26 | 01 | CO | 1E1 | 01G | E0 | E | C | C |  | L1 |  |  |  |  |
| WO010E0100 |  | 010 Above Ground Electrical | WBS summary | 103d | 2007-06-16 | 2007-11-04 | EK000YA000 | 131d | 447d | EBWK 6 Day Egypt Holidays | Aboveground Electrical - Construction [91932 h] | 2006-07-29 | P00 | 0 | 0 | 01A | E0P00 |  |  | 01 | CO | E00 | 010 | E0 | E | WC | C |  |  |  |  |  |  |
| CO01YE0110 |  | 01Y Lighting JB's, Stands, Tray & Cable |  | 36d | 2007-06-21 | 2007-08-01 | CO01YS0120, PO000E0010 FS+30d, CO01YC0130 | 175d | 0d | EBWK 6 Day Egypt Holidays |  | 2006-07-29 | 110 | 0 | 0 | 01Y | E0110 |  | 24 | 01 | CO | 1E2 | 01Y | E0 | E | C | C |  |  |  |  |  |  |
| CO01CE0110 |  | 01C Lighting JB's, Stands, Tray & Cable |  | 18d | 2007-06-28 | 2007-07-18 | CO01CS0120, PO000E0010 FS+30d, EM000ELEJ2 FF+30d, CO01CC0130 | 124d | 0d | EBWK 6 Day Egypt Holidays |  | 2006-07-29 | 110 | 0 | 0 | 01C | E0110 |  | 6 | 01 | CO | 1E2 | 01C | E0 | E | C | C |  |  |  |  |  |  |
| CO01DE0110 |  | 01D Lighting JB's, Stands, Tray & Cable |  | 36d | 2007-07-02 | 2007-08-12 | CO01DS0120, PO000E0010 FS+30d, EM000ELEJ2 FF+30d, CO01DC0130 | 66d | 0d | EBWK 6 Day Egypt Holidays |  | 2006-07-29 | 110 | 1.1 | 0.1 | 01D | E0110 |  | 27 | 01 | CO | 1E2 | 01D | E0 | E | C | C |  |  | 31 | 36 | 41 |  |
| CO01HE0110 |  | 01H Lighting JB's, Stands, Tray & Cable |  | 18d | 2007-07-12 | 2007-08-01 | PO000E0010 FS+30d, CO01HA0110, CO01HS0110 | 69d | 0d | EBWK 6 Day Egypt Holidays |  | 2006-07-29 | 110 | 0 | 0 | 01H | E0110 |  | 0 | 01 | CO | 1E2 | 01H | E0 | E | C | C |  |  |  |  |  |  |
| CO01CE0120 |  | 01C Lighting Fixture Installation/Termination |  | 6d | 2007-07-19 | 2007-07-25 | CO01CE0110 | 124d | 53d | EBWK 6 Day Egypt Holidays |  | 2006-07-29 | 120 | 0 | 0 | 01C | E0120 |  | 6 | 01 | CO | 1E3 | 01C | E0 | E | C | C |  |  |  |  |  |  |
| CO01HE0140 |  | 01H Set Transformers TR-100/ 103/ 104/ 105 |  | 12d | 2007-07-19 | 2007-08-01 | CO01HC0140, PK01HE002L FS+30d, PK000E004L FS+30d | 33d | 0d | EBWK 6 Day Egypt Holidays |  | 2006-07-29 | 130 | 8.7 | 0 | 01H | E0130 |  | 0 | 01 | CO | 1E0 | 01H | E0 | E | C | C |  |  | 10 | 12 | 13 |  |
| CO01YE0130 |  | 01Y Power/Control JB's, Tray, Cable, Termination |  | 36d | 2007-07-19 | 2007-08-29 | CO01YP0140 FF+6d, PO000E0010 FS+30d, CO01YC0130 | 39d | 0d | EBWK 6 Day Egypt Holidays |  | 2006-07-29 | 130 | 0 | 0 | 01Y | E0130 |  | 24 | 01 | CO | 1E1 | 01Y | E0 | E | C | C |  |  |  |  |  |  |
| CO01CE0130 |  | 01C Power/Control JB's, Tray, Cable, Termination |  | 18d | 2007-07-21 | 2007-08-11 | CO01CP0140 FF+6d, PO000E0010 FS+30d, CO01CC0130 | 100d | 0d | EBWK 6 Day Egypt Holidays |  | 2006-07-29 | 130 | 0 | 0 | 01C | E0130 |  | 22 | 01 | CO | 1E1 | 01C | E0 | E | C | C |  |  |  |  |  |  |
| CO01GE0110 |  | 01G Lighting JB's, Stands, Tray & Cable |  | 36d | 2007-07-25 | 2007-09-04 | PO000E0010 FS+30d, CO01GA0110 | 28d | 0d | EBWK 6 Day Egypt Holidays |  | 2006-07-29 | 110 | 0 | 0 | 01G | E0110 |  | 26 | 01 | CO | 1E2 | 01G | E0 | E | C | C |  | L1 |  |  |  |  |
| CO01GE0140 |  | 01G Install UPS in Control Building |  | 18d | 2007-07-25 | 2007-08-14 | CO01GA0110 | -8d | 6d | EBWK 6 Day Egypt Holidays |  | 2006-07-29 | 150 | 0 | 0 | 01G | I0150 |  | 0 | 01 | CO | 1E0 | 01G | E0 | E | C | C |  | L1 |  |  |  | 2601K |
| CO01BE0130 |  | 01B Power/Control JB's, Tray, Cable, Termination |  | 68d | 2007-07-26 | 2007-11-04 | CO01BM0150 FF+24d, CO01BP0140 FF+6d, PO000E0010 FS+30d | 32d | 0d | EBWK 6 Day Egypt Holidays |  | 2006-07-29 | 130 | 3.4 | 0 | 01B | E0130 |  | -27 | 01 | CO | 1E1 | 01B | E0 | E | C | C |  |  | 63 | 68 | 73 |  |
| CO01DE0130 |  | 01D Power/Control JB's, Tray, Cable, Termination |  | 54d | 2007-07-26 | 2007-10-10 | CO01DM0150 FF+24d, CO01DP0140 FF+6d, PO000E0010 FS+30d, CO01DC0130 | 39d | 0d | EBWK 6 Day Egypt Holidays |  | 2006-07-29 | 130 | 0 | 4.8 | 01D | E0130 |  | -19 | 01 | CO | 1E1 | 01D | E0 | E | C | C |  |  | 45 | 54 | 60 |  |
| CO01BE0120 |  | 01B Lighting Fixture Installation/Termination |  | 18d | 2007-07-28 | 2007-08-16 | CO01BE0110 | 105d | 34d | EBWK 6 Day Egypt Holidays |  | 2006-07-29 | 120 | 0 | 0 | 01B | E0120 |  | 15 | 01 | CO | 1E3 | 01B | E0 | E | C | C |  |  | 15 | 18 | 20 |  |
| CO01EE0120 |  | 01E Lighting Fixture Installation/Termination |  | 18d | 2007-07-28 | 2007-08-16 | CO01EE0110, PO000E0010 FS+30d | 180d | 0d | EBWK 6 Day Egypt Holidays |  | 2006-07-29 | 120 | 0 | 0 | 01G | E0120 |  | 26 | 01 | CO | 1E3 | 01E | E0 | E | C | C |  |  |  |  |  |  |
| CO01FE0120 |  | 01F Lighting Fixture Installation/Termination |  | 18d | 2007-07-28 | 2007-08-16 | CO01FE0110 | 152d | 0d | EBWK 6 Day Egypt Holidays |  | 2006-07-29 | 120 | 0 | 0 | 01G | E0120 |  | 36 | 01 | CO | 1E3 | 01F | E0 | E | C | C |  |  |  |  |  |  |
| CO01HE0120 |  | 01H Lighting Fixture Installation/Termination |  | 12d | 2007-08-02 | 2007-08-15 | CO01HE0110 | 69d | 35d | EBWK 6 Day Egypt Holidays |  | 2006-07-29 | 120 | 0 | 0 | 01H | E0120 |  | 0 | 01 | CO | 1E3 | 01H | E0 | E | C | C |  |  |  |  |  |  |
| CO01HE0130 |  | 01H Power/Control JB's, Tray, Cable, Termination |  | 48d | 2007-08-02 | 2007-10-10 | CO01HA0110, CO01HE0140, CO01HS0110, CO01HM0110 FF+24d, PO000E0010 FS+30d, PK010E008P FF+40d | 33d | 0d | EBWK 6 Day Egypt Holidays |  | 2006-07-29 | 130 | 8.7 | 1.8 | 01H | E0130 |  | 19.00208333 | 01 | CO | 1E1 | 01H | E0 | E | C | C |  |  | 40 | 48 | 50 |  |
| CO01YE0120 |  | 01Y Lighting Fixture Installation/Termination |  | 18d | 2007-08-02 | 2007-08-22 | CO01YE0110 | 175d | 29d | EBWK 6 Day Egypt Holidays |  | 2006-07-29 | 120 | 0 | 0 | 01Y | E0120 |  | 24 | 01 | CO | 1E3 | 01Y | E0 | E | C | C |  |  |  |  |  |  |
| CO01AE0110 |  | 01A Lighting JB's, Stands, Tray & Cable |  | 12d | 2007-08-12 | 2007-08-25 | PO000E0010 FS+30d, CO01AK0150, EM000ELEJ2 FF+30d | 91d | 0d | EBWK 6 Day Egypt Holidays |  | 2006-07-29 | 110 | 0 | 0 | 01A | E0110 |  | 23.99791666 | 01 | CO | 1E2 | 01A | E0 | E | C | C |  |  |  |  |  |  |
| CO01DE0120 |  | 01D Lighting Fixture Installation/Termination |  | 18d | 2007-08-13 | 2007-09-02 | CO01DE0110 | 66d | 20d | EBWK 6 Day Egypt Holidays |  | 2006-07-29 | 120 | 1.1 | 3.7 | 01D | E0120 |  | 27 | 01 | CO | 1E3 | 01D | E0 | E | C | C |  |  | 15 | 18 | 20 |  |
| CO01AE0120 |  | 01A Lighting Fixture Installation/Termination |  | 6d | 2007-08-26 | 2007-09-01 | CO01AE0110 | 91d | 21d | EBWK 6 Day Egypt Holidays |  | 2006-07-29 | 120 | 0 | 0 | 01A | E0120 |  | 23.99791666 | 01 | CO | 1E3 | 01A | E0 | E | C | C |  |  |  |  |  |  |
| CO01GE0120 |  | 01G Lighting Fixture Installation/Termination |  | 18d | 2007-09-05 | 2007-10-08 | CO01GE0110 | 28d | 0d | EBWK 6 Day Egypt Holidays |  | 2006-07-29 | 120 | 0 | 0 | 01G | E0120 |  | 26 | 01 | CO | 1E3 | 01G | E0 | E | C | C |  | L1 |  |  |  |  |
| CO01AE0130 |  | 01A Power/Control JB's, Tray, Cable, Termination |  | 6d | 2007-10-03 | 2007-10-21 | CO01AM0150, PO000E0010 FS+30d | 66d | 12d | EBWK 6 Day Egypt Holidays |  | 2006-07-29 | 130 | 0 | 0 | 01A | E0130 |  | 35 | 01 | CO | 1E1 | 01A | E0 | E | C | C |  |  |  |  |  |  |

Notes:
- CO01YP0130: P3 Activity Log Info: Plant L.O. thru start erection of pipe 58 / weeks
- CO01YP0140: P3 Activity Log Info: Plant L.O. thru start erection of pipe 58 / weeks
- CO01CP0130: P3 Activity Log Info: Plant L.O. thru start erection of pipe 58 / weeks
- CO01BP0130: P3 Activity Log Info: Plant L.O. thru start erection of pipe 58 / weeks
- CO01DP0130: P3 Activity Log Info: Plant L.O. thru start erection of pipe 58 / weeks
- CO01CP0140: P3 Activity Log Info: Plant L.O. thru start erection of pipe 58 / weeks
- CO01BP0140: P3 Activity Log Info: Plant L.O. thru start erection of pipe 58 / weeks
- CO01DP0140: P3 Activity Log Info: Plant L.O. thru start erection of pipe 58 / weeks
- CO01AP0130: P3 Activity Log Info: Plant L.O. thru start erection of pipe 58 / weeks

| ID | WBS | Activity | Type | Duration | Start | Finish | Predecessors | Complete | Remaining | Planned start | Planned finish | Total float | Free float | Expected finish | Calendar | Resources | zData Date | Sequence | PCA Criticality Index | PCA Duration Sensitivity | User Defined Field 1 | User Definer Field 2 | user_number1 | EB02 - UNIT | EB01 - RESP | EB06 - WORK OP | EB03 - AREA | EB05 - DISCIPLINE | EB04 - CLASS | EB11 - FLAG | EB00 - EPC | user_integer2 | EB12 - TEMP | EB14 - RISK | Optimistic Duration | Most Likely Duration | Pessimistic Duration | EB22 - Critical Actvities |
| --- | --- | --- | --- | --- | --- | --- | --- | --- | --- | --- | --- | --- | --- | --- | --- | --- | --- | --- | --- | --- | --- | --- | --- | --- | --- | --- | --- | --- | --- | --- | --- | --- | --- | --- | --- | --- | --- | --- |
|  | I0 | **Instrumentation** |  |  | 2007-07-19 | 2008-02-02 |  |  |  |  |  |  |  |  |  |  |  |  |  |  |  |  |  |  |  |  |  |  |  |  |  |  |  |  |  |  |  |  |
| CO01YI0120 |  | 01Y Instrument JB's, Field Instr, Tray, Cable |  | 36d | 2007-07-19 | 2007-08-29 | PK020I131L, CO01YP0140 SS, CO01YP0140 FF+6d, EM020IC128 FS+30d, PK000I623L, PK000I616L, PK000I617L, PK000I611L, PK000I612L, PK000I621L, PK030I131L, PK030I611L, CO01YE0130 SS, EM020IC127 FS+40d, EM010IC123 FS+30d |  |  |  |  | 39d | 74d |  | EBWK 6 Day Egypt Holidays |  | 2006-07-29 | 120 | 0 | 0 | 01Y | I0120 | 24 | 01 | CO | 1I1 | 01Y | I0 | I | C | C |  |  |  |  |  |  |  |
| WO010I0100 |  | 010 Install Instruments & Test | WBS summary | 146d | 2007-07-19 | 2008-02-02 | EK000YA000 |  |  |  |  | 53d | 375d |  | EBWK 6 Day Egypt Holidays | Instrumentation and Control - Construction [5293.85 h] | 2006-07-29 | I00 | 0 | 0 | 01A | I0I00 |  | 01 | CO | I00 | 010 | I0 | I | WC | C |  |  |  |  |  |  |  |
| CO01CI0120 |  | 01C Instrument JB's, Field Instr, Tray, Cable |  | 18d | 2007-07-21 | 2007-08-11 | PK020I131L, CO01CP0140 SS, CO01CP0140 FF+6d, EM020IC128 FS+30d, PK000I623L, PK000I616L, PK000I617L, PK000I611L, PK000I612L, PK000I621L, PK030I131L, PK030I611L, EM01CSY272 FS+30d, CO01CE0130 SS, EM020IC127 FS+40d, EM010IC123 FS+30d |  |  |  |  | 100d | 112d |  | EBWK 6 Day Egypt Holidays |  | 2006-07-29 | 120 | 0 | 0 | 01C | I0120 | 22 | 01 | CO | 1I1 | 01C | I0 | I | C | C |  |  |  |  |  |  |  |
| CO01GI0150 |  | 01G Install DCS |  | 48d | 2007-07-25 | 2007-09-24 | CO01GA0110, PK01GIC35L, PK01GI352L, PK01GI354L, CO01GE0140 FF+24d |  |  |  |  | -14d | 7d |  | EBWK 6 Day Egypt Holidays |  | 2006-07-29 | 150 | 0 | 0 | 01G | I0150 | -15.00208333 | 01 | CO | 1I2 | 01G | I0 | I | PS | C | 48 | L1 | 02 |  |  |  |  |
| CO01BI0120 |  | 01B Instrument JB's, Field Instr, Tray, Cable |  | 68d | 2007-07-26 | 2007-11-04 | PK020I131L, CO01BP0140 SS, CO01BP0140 FF+6d, EM020IC128 FS+30d, PK000I623L, PK000I616L, PK000I617L, PK000I611L, PK000I612L, PK000I621L, PK030I131L, PK030I611L, EM01BSY272 FS+30d, CO01BE0130 SS, EM020IC127 FS+40d, EM010IC123 FS+30d |  |  |  |  | 32d | 61d |  | EBWK 6 Day Egypt Holidays |  | 2006-07-29 | 120 | 5.3 | 0 | 01B | I0120 | -27 | 01 | CO | 1I1 | 01B | I0 | I | C | C |  |  |  | 63 | 68 | 73 |  |
| CO01DI0120 |  | 01D Instrument JB's, Field Instr, Tray, Cable |  | 54d | 2007-07-26 | 2007-10-10 | PK020I131L, CO01DP0140 SS, CO01DP0140 FF+6d, EM020IC128 FS+30d, PK000I623L, PK000I616L, PK000I617L, PK000I611L, PK000I612L, PK000I621L, PK030I131L, PK030I611L, EM01DSY272 FS+30d, CO01DE0130 SS, EM020IC127 FS+40d, EM010IC123 FS+30d |  |  |  |  | 39d | 61d |  | EBWK 6 Day Egypt Holidays |  | 2006-07-29 | 120 | 0 | 0.9 | 01D | I0120 | -19 | 01 | CO | 1I1 | 01D | I0 | I | C | C |  |  |  | 45 | 54 | 60 |  |
| CO01CI0130 |  | 01C Install In Line Instruments |  | 3d | 2007-08-11 | 2007-08-14 | CO01CP0150 |  |  |  |  | 96d | 108d |  | EBWK 6 Day Egypt Holidays |  | 2006-07-29 | 130 | 0 | 0 | 01C | I0130 | 22 | 01 | CO | 1I2 | 01C | I0 | I | C | C |  |  |  |  |  |  |  |
| CO01YI0130 |  | 01Y Install In Line Instruments |  | 18d | 2007-08-30 | 2007-09-26 | CO01YP0150 |  |  |  |  | 139d | 86d |  | EBWK 6 Day Egypt Holidays |  | 2006-07-29 | 130 | 0 | 0 | 01Y | I0130 | 24 | 01 | CO | 1I2 | 01Y | I0 | I | C | C |  |  |  |  |  |  |  |
| CO01DI0130 |  | 01D Install In Line Instruments |  | 5d | 2007-10-20 | 2007-10-24 | CO01DP0150 |  |  |  |  | 41d | 65d |  | EBWK 6 Day Egypt Holidays |  | 2006-07-29 | 130 | 0 | 0 | 01D | I0130 | -19 | 01 | CO | 1I2 | 01D | I0 | I | C | C |  |  |  |  |  |  |  |
| CO01AI0120 |  | 01A Instrument JB's, Field Instr, Tray, Cable |  | 6d | 2007-10-29 | 2007-11-04 | PK020I131L, EM020IC128 FS+30d, CO01AP0130, PK000I623L, PK000I616L, PK000I617L, PK000I611L, PK000I612L, PK000I621L, PK030I131L, PK030I611L, EM01ASY272 FS+30d, CO01AE0130 SS, EM020IC127 FS+40d, EM010IC123 FS+30d |  |  |  |  | 54d | 66d |  | EBWK 6 Day Egypt Holidays |  | 2006-07-29 | 120 | 0 | 0 | 01A | I0120 | 35 | 01 | CO | 1I1 | 01A | I0 | I | C | C |  |  |  |  |  |  |  |
| CO01AI0130 |  | 01A Install In Line Instruments |  | 1d | 2007-11-01 | 2007-11-01 | CO01AP0150 |  |  |  |  | 57d | 69d |  | EBWK 6 Day Egypt Holidays |  | 2006-07-29 | 130 | 0 | 0 | 01A | I0130 | 35 | 01 | CO | 1I2 | 01A | I0 | I | C | C |  |  |  |  |  |  |  |
| CO01BI0130 |  | 01B Install In Line Instruments |  | 7d | 2007-11-05 | 2007-11-12 | CO01BP0150 |  |  |  |  | 37d | 67d |  | EBWK 6 Day Egypt Holidays |  | 2006-07-29 | 130 | 0.1 | 0 | 01B | I0130 | -30 | 01 | CO | 1I2 | 01B | I0 | I | C | C |  |  |  | 6 | 7 | 10 |  |
| CO01GI0120 |  | 01G DCS Cable Terminations |  | 48d | 2007-11-05 | 2008-01-05 | PK020I131L, EM020IC128 FS+30d, CO01GI0150, PK000I623L, PK000I616L, PK000I617L, PK000I611L, PK000I612L, PK000I621L, PK030I131L, PK030I611L, CO02YI0120 FF+12d, CO01YI0120 FF+12d, CO03YI0120 FF+12d, EM020IC127 FS+40d, EM010IC123 FS+30d |  |  |  |  | -35d | 0d |  | EBWK 6 Day Egypt Holidays |  | 2006-07-29 | 120 | 53.2 | 5.3 | 01G | I0120 | 12 | 01 | CO | 1I2 | 01G | I0 | I | C | C | 48 | L1 | 02 | 36 | 48 | 60 | C3 |
| CO01DI0140 |  | 01D Continuity Testing |  | 5d | 2008-01-06 | 2008-01-10 | CO01DI0120 SS, CO01DI0120 FF+6d, CO01GI0120 |  |  |  |  | -22d | 0d |  | EBWK 6 Day Egypt Holidays |  | 2006-07-29 | 140 | 5.8 | 0 | 01D | I0140 | 12 | 01 | CO | 1I3 | 01D | I0 | I | C | C |  |  |  | 4 | 5 | 6 | C3 |
| CO01YI0140 |  | 01Y Continuity Testing |  | 18d | 2008-01-13 | 2008-02-02 | CO01YI0120 SS, CO01YI0120 FF+6d, CO01GI0120 FS+6d |  |  |  |  | 53d | 0d |  | EBWK 6 Day Egypt Holidays |  | 2006-07-29 | 140 | 0 | 0 | 01Y | I0140 | 12 | 01 | CO | 1I3 | 01Y | I0 | I | C | C |  |  |  |  |  |  |  |
| CO01BI0140 |  | 01B Continuity Testing |  | 7d | 2008-01-20 | 2008-01-27 | CO01BI0120 SS, CO01BI0120 FF+6d, CO01GI0120 FS+12d |  |  |  |  | -29d | 0d |  | EBWK 6 Day Egypt Holidays |  | 2006-07-29 | 140 | 6.1 | 1.3 | 01B | I0140 | 12 | 01 | CO | 1I3 | 01B | I0 | I | C | C |  |  |  | 5 | 7 | 9 |  |
| CO01CI0140 |  | 01C Continuity Testing |  | 3d | 2008-01-20 | 2008-01-22 | CO01CI0120 SS, CO01CI0120 FF+6d, CO01GI0120 FS+12d |  |  |  |  | -12d | 0d |  | EBWK 6 Day Egypt Holidays |  | 2006-07-29 | 140 | 0 | 1.2 | 01C | I0140 | 12 | 01 | CO | 1I3 | 01C | I0 | I | C | C |  |  |  | 2 | 3 | 4 | C5 |
| CO01AI0140 |  | 01A Continuity Testing |  | 1d | 2008-01-27 | 2008-01-27 | CO01AI0120, CO01GI0120 FS+18d |  |  |  |  | -12d | 0d |  | EBWK 6 Day Egypt Holidays |  | 2006-07-29 | 140 | 0 | 0 | 01A | I0140 | 12 | 01 | CO | 1I3 | 01A | I0 | I | C | C |  |  |  |  |  |  |  |
|  | V1 | **Painting** |  |  | 2006-11-23 | 2007-11-04 |  |  |  |  |  |  |  |  |  |  |  |  |  |  |  |  |  |  |  |  |  |  |  |  |  |  |  |  |  |  |  |  |
| CO01BV1110 |  | 01B Paint Fabricated Pipe Spools |  | 20d | 2006-11-23 A | 2007-04-29 | CK01BU4110 SS+18d, CK01BU4110 FF+12d, PO000V1005, CK01BP0110 FF+6d |  | 20d | 2007-01-11 | 2007-02-03 | 153d | 121d |  | EBWK 6 Day Egypt Holidays |  | 2006-07-29 | 110 | 0 | 0 | 01B | V1110 | 0 | 01 | CO | 1V1 | 01B | V1 | V |  | C |  |  |  |  |  |  |  |
| CO01CV1110 |  | 01C Paint Fabricated Pipe Spools |  | 6d | 2006-11-23 A | 2007-04-12 | CK01CU4110 SS+12d, CK01CU4110 FF+12d, PO000V1005, CK01CP0110 FF+6d |  | 6d | 2007-01-28 | 2007-02-03 | 174d | 81d |  | EBWK 6 Day Egypt Holidays |  | 2006-07-29 | 110 | 0 | 0 | 01C | V1110 | 0 | 01 | CO | 1V1 | 01C | V1 | V |  | C |  |  |  |  |  |  |  |
| CO01DV1110 |  | 01D Paint Fabricated Pipe Spools |  | 16d | 2006-11-23 A | 2007-04-28 | CK01DU4110 SS+18d, CK01DU4110 FF+12d, PO000V1005, CK01DP0110 FF+6d |  | 16d | 2007-01-16 | 2007-02-03 | 142d | 108d |  | EBWK 6 Day Egypt Holidays |  | 2006-07-29 | 110 | 0 | 0 | 01D | V1110 | 6 | 01 | CO | 1V1 | 01D | V1 | V |  | C |  |  |  |  |  |  |  |
| WO010V1100 |  | 010 Paint | WBS summary | 269d | 2006-11-23 A | 2007-11-04 | EK000YA000 | 18% | 220d | 2006-11-27 | 2007-11-04 | 131d | 447d |  | EBWK 6 Day Egypt Holidays | Insulation - Construction [46162.6 h] | 2006-07-29 | V10 | 0 | 0 | 01A | V1V10 |  | 01 | CO | V10 | 010 | V1 | V | WC | C |  |  |  |  |  |  |  |
| CO01YV1110 |  | 01Y Paint Fabricated Pipe Spools |  | 42d | 2006-11-27 A | 2007-03-07 | PO000V1005, CK01YP0110 SS+12d, CK01YP0110 FF+6d | 81% | 8d | 2006-11-27 | 2007-01-21 | 149d | 0d | 2007-01-21 | EBWK 6 Day Egypt Holidays |  | 2006-07-29 | 110 | 0 | 0 | 01Y | V1110 | 0.00208333 | 01 | CO | 1V1 | 01Y | V1 | V |  | C |  |  |  |  |  |  |  |
| CO01AV1110 |  | 01A Paint Fabricated Pipe Spools |  | 3d | 2006-12-25 A | 2007-02-01 | PO000V1005, CK01AP0110, CK01AP0110 FF+6d |  | 3d | 2007-01-06 | 2007-01-08 | 253d | 199d |  | EBWK 6 Day Egypt Holidays |  | 2006-07-29 | 110 | 0 | 0 | 01A | V1110 | -2.99791666 | 01 | CO | 1V1 | 01A | V1 | V |  | C |  |  |  |  |  |  |  |
| CO01BV1130 |  | 01B Paint Touch-up - Equipment |  | 20d | 2007-07-03 | 2007-07-25 | CO01BM0150 FF+12d, CO01BM0130 FF+24d, CO01BM0140 FF+24d, PO000V1005 |  |  |  |  | 100d | 0d |  | EBWK 6 Day Egypt Holidays |  | 2006-07-29 | 130 | 0 | 0 | 01B | V1130 | -30 | 01 | CO | 1V3 | 01B | V1 | V |  | C |  |  |  |  |  |  |  |
| CO01DV1130 |  | 01D Paint Touch-up - Equipment |  | 16d | 2007-07-08 | 2007-07-25 | CO01DM0150 FF+12d, CO01DM0130, PO000V1005 |  |  |  |  | 88d | 0d |  | EBWK 6 Day Egypt Holidays |  | 2006-07-29 | 130 | 0 | 0 | 01D | V1130 | -19 | 01 | CO | 1V3 | 01D | V1 | V |  | C |  |  |  |  |  |  |  |
| CO01YV1120 |  | 01Y Paint Touch-up - Piping |  | 36d | 2007-07-19 | 2007-08-29 | CO01YP0140 FF+6d |  |  |  |  | 169d | 110d |  | EBWK 6 Day Egypt Holidays |  | 2006-07-29 | 120 | 0 | 0 | 01Y | V1120 | 24 | 01 | CO | 1V2 | 01Y | V1 | V |  | C |  |  |  |  |  |  |  |
| CO01CV1120 |  | 01C Paint Touch-up - Piping |  | 18d | 2007-07-21 | 2007-08-11 | CO01CP0140 FF+6d |  |  |  |  | 93d | 0d |  | EBWK 6 Day Egypt Holidays |  | 2006-07-29 | 120 | 0 | 0 | 01C | V1120 | 22 | 01 | CO | 1V2 | 01C | V1 | V |  | C |  |  |  |  |  |  |  |
| CO01CV1130 |  | 01C Paint Touch-up - Equipment |  | 18d | 2007-07-21 | 2007-08-11 | PO000V1005, CO01CV1120 SS |  |  |  |  | 93d | 0d |  | EBWK 6 Day Egypt Holidays |  | 2006-07-29 | 130 | 0 | 0 | 01C | V1130 | 22 | 01 | CO | 1V3 | 01C | V1 | V |  | C |  |  |  |  |  |  |  |
| CO01DV1120 |  | 01D Paint Touch-up - Piping |  | 16d | 2007-09-09 | 2007-10-10 | CO01DP0140 FF+6d |  |  |  |  | 45d | 67d |  | EBWK 6 Day Egypt Holidays |  | 2006-07-29 | 120 | 0 | 3.5 | 01D | V1120 | -19 | 01 | CO | 1V2 | 01D | V1 | V |  | C |  |  |  | 12 | 16 | 18 |  |
| CO01BV1120 |  | 01B Paint Touch-up - Piping |  | 20d | 2007-09-29 | 2007-11-04 | CO01BP0140 FF+6d |  |  |  |  | 56d | 67d |  | EBWK 6 Day Egypt Holidays |  | 2006-07-29 | 120 | 0 | 1 | 01B | V1120 | -30 | 01 | CO | 1V2 | 01B | V1 | V |  | C |  |  |  | 15 | 20 | 25 |  |
| CO01AV1120 |  | 01A Paint Touch-up - Piping |  | 3d | 2007-10-29 | 2007-10-31 | CO01AP0130 |  |  |  |  | 58d | 70d |  | EBWK 6 Day Egypt Holidays |  | 2006-07-29 | 120 | 0 | 0 | 01A | V1120 | 35 | 01 | CO | 1V2 | 01A | V1 | V |  | C |  |  |  |  |  |  |  |

| ID | WBS | Activity | Type | Duration | Start | Finish | Predecessors | Complete | Remaining | Planned start | Planned finish | Total float | Free float | Constraint | Expected finish | Calendar | Resources | zData Date | Sequence | PCA Criticality Index | PCA Duration Sensitivity | User Defined Field 1 | User Definer Field 2 | user_number1 | EB02 - UNIT | EB01 - RESP | EB06 - WORK OP | EB03 - AREA | EB05 - DISCIPLINE | EB04 - CLASS | EB00 - EPC | EB11 - FLAG | Optimistic Duration | Most Likely Duration | Pessimistic Duration | user_integer2 | EB19 - System | EB12 - TEMP | EB22 - Critical Actvities |
| --- | --- | --- | --- | --- | --- | --- | --- | --- | --- | --- | --- | --- | --- | --- | --- | --- | --- | --- | --- | --- | --- | --- | --- | --- | --- | --- | --- | --- | --- | --- | --- | --- | --- | --- | --- | --- | --- | --- | --- |
|  | V2 | **Insulation** |  |  | 2007-07-31 | 2007-12-02 |  |  |  |  |  |  |  |  |  |  |  |  |  |  |  |  |  |  |  |  |  |  |  |  |  |  |  |  |  |  |  |  |  |
| CO01BV2110 |  | 01B Insulate - Equipment |  | 20d | 2007-07-31 | 2007-08-22 | CO01BM0110 FF+24d, CO01BV1130 FF+24d, PO000V2005 FF+30d |  |  |  |  | 100d | 130d |  |  | EBWK 6 Day Egypt Holidays |  | 2006-07-29 | 110 | 0 | 0 | 01B | V2110 | -21 | 01 | CO | 1V5 | 01B | V2 | V | C |  |  |  |  |  |  |  |  |
| WO010V2100 |  | 010 Insulation | WBS summary | 88d | 2007-07-31 | 2007-12-02 | EK000YA000 |  |  |  |  | 107d | 423d |  |  | EBWK 6 Day Egypt Holidays | Insulation - Construction [4519.62 h] | 2006-07-29 | V20 | 0 | 0 | 01B | V2V20 |  | 01 | CO | V20 | 010 | V2 | V | C | WC |  |  |  |  |  |  |  |
| CO01DV2110 |  | 01D Insulate - Equipment |  | 16d | 2007-08-05 | 2007-08-22 | CO01DM0110 FF+24d, CO01DV1130 FF+24d, PO000V2005 FF+30d |  |  |  |  | 88d | 112d |  |  | EBWK 6 Day Egypt Holidays |  | 2006-07-29 | 110 | 0 | 0 | 01D | V2110 | -19 | 01 | CO | 1V5 | 01D | V2 | V | C |  |  |  |  |  |  |  |  |
| CO01CV2120 |  | 01C Insulate - Piping |  | 18d | 2007-08-07 | 2007-08-28 | CO01CP0150 SS+6d, CO01CP0150 FF+6d, PO000V2005 FF+30d |  |  |  |  | 96d | 108d |  |  | EBWK 6 Day Egypt Holidays |  | 2006-07-29 | 120 | 0 | 0 | 01C | V2120 | 10 | 01 | CO | 1V6 | 01C | V2 | V | C |  |  |  |  |  |  |  |  |
| CO01CV2110 |  | 01C Insulate - Equipment |  | 18d | 2007-08-11 | 2007-09-01 | CO01CM0110, CO01CV1130, PO000V2005 FF+30d |  |  |  |  | 93d | 105d |  |  | EBWK 6 Day Egypt Holidays |  | 2006-07-29 | 110 | 0 | 0 | 01C | V2110 | 13 | 01 | CO | 1V5 | 01C | V2 | V | C |  |  |  |  |  |  |  |  |
| CO01YV2120 |  | 01Y Insulate - Piping |  | 36d | 2007-08-30 | 2007-11-01 | CO01YP0150 SS+24d, CO01YP0150 FF+24d, PO000V2005 FF+30d |  |  |  |  | 133d | 80d |  |  | EBWK 6 Day Egypt Holidays |  | 2006-07-29 | 120 | 0 | 0 | 01Y | V2120 | 24 | 01 | CO | 1V6 | 01Y | V2 | V | C |  |  |  |  |  |  |  |  |
| CO01DV2120 |  | 01D Insulate - Piping |  | 21d | 2007-10-23 | 2007-11-15 | CO01DP0150 SS+24d, CO01DP0150 FF+24d, PO000V2005 FF+30d |  |  |  |  | 34d | 58d |  |  | EBWK 6 Day Egypt Holidays |  | 2006-07-29 | 120 | 0 | 1.5 | 01D | V2120 | -19 | 01 | CO | 1V6 | 01D | V2 | V | C |  | 18 | 21 | 23 |  |  |  |  |
| CO01BV2120 |  | 01B Insulate - Piping |  | 27d | 2007-11-01 | 2007-12-02 | CO01BP0150 SS+24d, CO01BP0150 FF+24d, PO000V2005 FF+30d |  |  |  |  | 32d | 62d |  |  | EBWK 6 Day Egypt Holidays |  | 2006-07-29 | 120 | 1.6 | 8.8 | 01B | V2120 | -30 | 01 | CO | 1V6 | 01B | V2 | V | C |  | 25 | 27 | 30 |  |  |  |  |
|  | K0 | **Site Prep** |  |  | 2007-07-01 | 2008-02-27 |  |  |  |  |  |  |  |  |  |  |  |  |  |  |  |  |  |  |  |  |  |  |  |  |  |  |  |  |  |  |  |  |  |
| CO01AK0150 |  | 01A Excavate Evaporation Pond |  | 36d | 2007-07-01 | 2007-08-11 | XE000K0110, EK000CV137 FS+30d, CO000K0110 SS, CO01BM0130 |  |  |  |  | 54d | 0d | start on or after 2007-07-01 |  | EBWK 6 Day Egypt Holidays | Site Preparation/ Other Civil - Construction | 2006-07-29 | 150 | 0 | 0 | 01A | C0150 | 35 | 01 | CO | 1K0 | 01A | K0 | K | C |  |  |  |  |  |  |  |  |
| WO010K0100 |  | 010 Site Prep | WBS summary | 184d | 2007-07-01 | 2008-02-27 | EK000YA000 |  |  |  |  | 37d | 353d |  |  | EBWK 6 Day Egypt Holidays | Site Preparation/ Other Civil - Construction [87346.4 h] | 2006-07-29 | 150 | 0 | 0 | 000 | C0150 |  | 01 | CO | K00 | 010 | K0 | K | C | WC |  |  |  |  |  |  |  |
| CO01AK0160 |  | 01A Install Liner at Evaporation Pond |  | 30d | 2007-08-12 | 2007-09-17 | CO01AK0150 |  |  |  |  | 54d | 0d |  |  | EBWK 6 Day Egypt Holidays | Site Preparation/ Other Civil - Construction | 2006-07-29 | 160 | 0 | 0 | 01A | C0160 | 35 | 01 | CO | 1K0 | 01A | K0 | K | C |  |  |  |  |  |  |  |  |
| CO01JC0150 |  | 01K Excavate Pond |  | 24d | 2007-08-12 | 2007-09-08 | CO000K0100, CO01AK0150 |  |  |  |  | 55d | 90d | start on or after 2007-04-01 |  | EBWK 6 Day Egypt Holidays |  | 2006-07-29 | 130 | 0 | 0 | 01Y | P0130 | 0.00208333 | 01 | CO | 1K0 | 01K | K0 | K | C |  |  |  |  | 12 |  |  |  |
| CO010K0130 |  | 010 Compl Roads, Ditches, Paving, & Rock Surfacing |  | 66d | 2007-12-01 | 2008-02-27 | CO010K0120, CO020M0130, CO01FT0110 FF, XE000OW365 FF |  |  | 2007-12-01 | 2008-02-20 | 9d | 0d | start on or after 2007-12-01 |  | EBWK 6 Day Egypt Holidays | Site Preparation/ Other Civil - Construction | 2006-07-29 | 150 | 0 | 0.8 | 000 | C0150 | -29 | 01 | CO | 1K0 | 010 | K0 | K | C |  | 60 | 72 | 75 |  |  |  |  |
| CO010K0140 |  | 010 Finish Grading |  | 72d | 2007-12-01 | 2008-02-27 | CO010K0130 FF, CO01AK0150 |  |  |  |  | 37d | 0d | start on or after 2007-01-01 |  | EBWK 6 Day Egypt Holidays | Site Preparation/ Other Civil - Construction | 2006-07-29 | 150 | 0 | 0 | 000 | C0150 | 0 | 01 | CO | 1K0 | 010 | K0 | K | C |  |  |  |  |  |  |  |  |
|  | K1 | **Perimeter Wall** |  |  | 2006-01-15 | 2007-04-28 |  |  |  |  |  |  |  |  |  |  |  |  |  |  |  |  |  |  |  |  |  |  |  |  |  |  |  |  |  |  |  |  |  |
| CO000C0150 |  | Perimeter Wall |  | 268d | 2006-01-15 A | 2007-04-28 | PO000C0050, EK000CV065, EK000CK085 FF, EK000GE150 | 71% | 79d | 2006-03-12 | 2007-02-14 | 27d | 0d |  | 2007-04-28 | EBWK 6 Day Egypt Holidays |  | 2006-07-29 | 150 | 0 | 0 | 000 | C0150 | 80 | 01 | CO | 1K0 | 010 | K0 | K | C | PS |  |  |  |  |  |  |  |
| WO010K0110 |  | 010 Site Prep - Perimeter Wall | WBS summary | 268d | 2006-01-15 A | 2007-04-28 | EK000YA000 | 71% | 79d | 2006-03-12 | 2007-02-14 | 27d | 591d |  |  | EBWK 6 Day Egypt Holidays | Site Preparation/ Other Civil - Construction [160415 h] | 2006-07-29 | 150 | 0 | 0 | 000 | C0150 |  | 01 | CO | K00 | 010 | K0 | K | C | WC |  |  |  |  |  |  |  |
|  | T0 | **Mechanical Completion** |  |  | 2007-01-27 | 2008-02-18 |  |  |  |  |  |  |  |  |  |  |  |  |  |  |  |  |  |  |  |  |  |  |  |  |  |  |  |  |  |  |  |  |  |
| SC01JT0120 |  | 01J RFSU | milestone | 0d | 2007-01-27 | 2007-01-27 |  |  |  |  |  | 441d | 500d |  |  | EBWK 7 Day No Holidays |  | 2006-07-29 | 120 | 0 | 0 | 01J | T0120 |  | 01 | SC | 000 | 01J | T0 | T | S | C |  |  |  |  |  |  |  |
| CO01UDT110 |  | 01U Mechanical Completion | milestone | 0d | 2007-04-25 | 2007-04-25 | CO01UP0150 FF, CO01BU4120, CO01CU4120, CO01DU4120, CO01EU4130, CO01UP0150 |  |  |  |  | 277d | 0d |  |  | EBWK 6 Day Egypt Holidays |  | 2006-07-29 | 110 | 0 | 0 | 01D | T0110 | 8 | 01 | CO | 1T1 | 01U | T0 | T | C | C |  |  |  |  | 01U |  |  |
| SC01UT0120 |  | 01U RFSU | milestone | 0d | 2007-04-25 | 2007-04-25 | CO01UDT110 FF |  |  |  |  | 352d | 411d |  |  | EBWK 7 Day No Holidays |  | 2006-07-29 | 120 | 0 | 0 | 01U | T0120 |  | 01 | SC | 000 | 01U | T0 | T | S | C |  |  |  |  | 01U |  |  |
| CO01ET0110 |  | 01E Mechanical Completion | milestone | 0d | 2007-08-16 | 2007-08-16 | CO01EE0120 FF, CO01EC0135 |  |  |  |  | 180d | 0d |  |  | EBWK 6 Day Egypt Holidays |  | 2006-07-29 | 110 | 0 | 0 | 01E | T0110 | 35 | 01 | CO | 1T1 | 01E | T0 | T | C | C |  |  |  |  |  |  |  |
| CO01FT0110 |  | 01F Mechanical Completion | milestone | 0d | 2007-08-16 | 2007-08-16 | CO01FE0120 FF, CO01FC0135 |  |  |  |  | 152d | 0d |  |  | EBWK 6 Day Egypt Holidays |  | 2006-07-29 | 110 | 0 | 0 | 01F | T0110 | 12 | 01 | CO | 1T1 | 01F | T0 | T | C | C |  |  |  |  |  |  |  |
| SC01ET0120 |  | 01E RFSU | milestone | 0d | 2007-08-16 | 2007-08-16 | CO01ET0110 FF |  |  |  |  | 239d | 298d |  |  | EBWK 7 Day No Holidays |  | 2006-07-29 | 120 | 0 | 0 | 01E | T0120 |  | 01 | SC | 000 | 01E | T0 | T | S | C |  |  |  |  |  |  |  |
| SC01FT0120 |  | 01F RFSU | milestone | 0d | 2007-08-16 | 2007-08-16 | CO01FT0110 FF |  |  |  |  | 239d | 298d |  |  | EBWK 7 Day No Holidays |  | 2006-07-29 | 120 | 0 | 0 | 01F | T0120 |  | 01 | SC | 000 | 01F | T0 | T | S | C |  |  |  |  |  |  |  |
| CO01HT0110 |  | 01H Mechanical Completion | milestone | 0d | 2007-10-10 | 2007-10-10 | CO01HE0120 FF, CO01HE0130 FF, CO01HC0120 FF, CO01HU3110 FF |  |  |  |  | 33d | 0d |  |  | EBWK 6 Day Egypt Holidays |  | 2006-07-29 | 110 | 8.7 | 0 | 01H | T0110 | 19.00208333 | 01 | CO | 1T1 | 01H | T0 | T | C | C |  |  |  |  |  |  |  |
| SC01HT0120 |  | 01H RFSU | milestone | 0d | 2007-11-16 | 2007-11-16 | CO01HT0110 FF, CO000E0500 FF |  |  |  |  | 10d | 57d |  |  | EBWK 7 Day No Holidays |  | 2006-07-29 | 120 | 8.5 | 0 | 01H | T0120 |  | 01 | SC | 000 | 01H | T0 | T | S | C |  |  |  |  |  |  |  |
| CO01GT0110 |  | 01G Mechanical Completion | milestone | 0d | 2008-01-05 | 2008-01-05 | CO01GE0120 FF, CO01GE0130 FF, CO01GC0130 FF, CO01GI0120 FF, XE000OW375 FF |  |  |  |  | -35d | 0d |  |  | EBWK 6 Day Egypt Holidays |  | 2006-07-29 | 110 | 48.9 | 0 | 01G | T0110 | 12 | 01 | CO | 1T1 | 01G | T0 | T | C | C |  |  |  |  |  | L1 | C3 |
| SC01GT0120 |  | 01G RFSU | milestone | 0d | 2008-01-05 | 2008-01-05 | CO01GI0150 FF, CO01GT0110 FF, CO01GI0120 |  |  |  |  | -47d | 0d |  |  | EBWK 7 Day No Holidays |  | 2006-07-29 | 120 | 39.5 | 0 | 01G | T0120 |  | 01 | SC | 000 | 01G | T0 | T | S | C |  |  |  |  |  |  | C3 |
| CO01DT0110 |  | 01D Mechanical Completion | milestone | 0d | 2008-01-10 | 2008-01-10 | CO01DE0120 FF, CO01DE0130 FF, CO01DI0140 FF, CO01DP0150 FF, CO01DV1120 FF, CO01DV1130 FF |  |  |  |  | -22d | 13d |  |  | EBWK 6 Day Egypt Holidays |  | 2006-07-29 | 110 | 1.7 | 0 | 01D | T0110 | 12 | 01 | CO | 1T1 | 01D | T0 | T | C | C |  |  |  |  |  |  | C3 |
| CO01CT0110 |  | 01C Mechanical Completion | milestone | 0d | 2008-01-22 | 2008-01-22 | CO01CE0120 FF, CO01CE0130 FF, CO01CI0140 FF, CO01CP0150 FF, CO01CV1120 FF, CO01CV1130 FF, CO01CA0110 FF |  |  |  |  | -7d | 5d |  |  | EBWK 6 Day Egypt Holidays |  | 2006-07-29 | 110 | 0 | 0 | 01C | T0110 | 12 | 01 | CO | 1T1 | 01C | T0 | T | C | C |  |  |  |  |  |  |  |
| CO01AT0110 |  | 01A Mechanical Completion | milestone | 0d | 2008-01-27 | 2008-01-27 | CO01AE0120 FF, CO01AE0130 FF, CO01AI0140 FF, CO01AP0150 FF, CO01AV1120 FF, CO01AI0130 FF |  |  |  |  | -12d | 0d |  |  | EBWK 6 Day Egypt Holidays |  | 2006-07-29 | 110 | 0 | 0 | 01A | T0110 | 12 | 01 | CO | 1T1 | 01A | T0 | T | C | C |  |  |  |  |  |  |  |
| CO01BT0110 |  | 01B Mechanical Completion | milestone | 0d | 2008-01-27 | 2008-01-27 | CO01BE0120 FF, CO01BE0130 FF, CO01BI0140 FF, CO01BP0150 FF, CO01BV1120 FF, CO01BV1130 FF, XE000OW355 FF, CO01BC0120 FF, CO01BU3110 FF |  |  |  |  | -11d | 6d |  |  | EBWK 6 Day Egypt Holidays |  | 2006-07-29 | 110 | 0 | 0 | 01B | T0110 | 12 | 01 | CO | 1T1 | 01B | T0 | T | C | C |  |  |  |  |  |  | C5 |
| SC01AT0120 |  | 01A RFSU | milestone | 0d | 2008-01-28 | 2008-01-28 | CO01AT0110 FF, SC01AI0150 FF |  |  |  |  | -14d | 33d |  |  | EBWK 7 Day No Holidays |  | 2006-07-29 | 120 | 0 | 0 | 01A | T0120 |  | 01 | SC | 000 | 01A | T0 | T | S | C |  |  |  |  |  |  |  |
| SC01CT0120 |  | 01C RFSU | milestone | 0d | 2008-01-28 | 2008-01-28 | SC01CI0150 FF, CO01CV2110, CO01CV2120 FF, CO01CT0110 FF |  |  |  |  | -14d | 33d |  |  | EBWK 7 Day No Holidays |  | 2006-07-29 | 120 | 0 | 0 | 01C | T0120 |  | 01 | SC | 000 | 01C | T0 | T | S | C |  |  |  |  |  |  |  |
| SC01DT0120 |  | 01D RFSU | milestone | 0d | 2008-01-28 | 2008-01-28 | SC01DI0150 FF, CO01DV2110, CO01DV2120 FF, CO01DT0110 FF |  |  |  |  | -28d | 19d |  |  | EBWK 7 Day No Holidays |  | 2006-07-29 | 120 | 5.1 | 0 | 01D | T0120 |  | 01 | SC | 000 | 01D | T0 | T | S | C |  |  |  |  |  |  | C4 |
| CO01YT0110 |  | 01Y Mechanical Completion | milestone | 0d | 2008-02-02 | 2008-02-02 | CO01YE0120 FF, CO01YE0130 FF, CO01YI0140 FF, CO01YP0150 FF, CO01YV1120 FF |  |  |  |  | 59d | 6d |  |  | EBWK 6 Day Egypt Holidays |  | 2006-07-29 | 110 | 0 | 0 | 01Y | T0110 | 12 | 01 | CO | 1T1 | 01Y | T0 | T | C | C |  |  |  |  |  |  |  |
| SC01YT0120 |  | 01Y RFSU | milestone | 0d | 2008-02-09 | 2008-02-09 | SC01YI0150 FF, CO01YV2120 FF, CO01YT0110 FF |  |  |  |  | 62d | 121d |  |  | EBWK 7 Day No Holidays |  | 2006-07-29 | 120 | 0 | 0 | 01Y | T0120 |  | 01 | SC | 000 | 01Y | T0 | T | S | C |  |  |  |  |  |  |  |
| SC01BT0120 |  | 01B RFSU | milestone | 0d | 2008-02-18 | 2008-02-18 | SC01BI0150 FF, CO01BV2110, CO01BV2120 FF, CO01BT0110 FF |  |  |  |  | -35d | 12d |  |  | EBWK 7 Day No Holidays |  | 2006-07-29 | 120 | 7.1 | 0 | 01B | T0120 |  | 01 | SC | 000 | 01B | T0 | T | S | C |  |  |  |  |  |  | C4 |

| ID | WBS | Activity | Type | Duration | Start | Finish | Predecessors | Complete | Remaining | Planned start | Planned finish | Total float | Free float | Constraint | Expected finish | Calendar | Resources | zData Date | Sequence | PCA Criticality Index | PCA Duration Sensitivity | User Defined Field 1 | User Definer Field 2 | EB02 - UNIT | EB01 - RESP | EB06 - WORK OP | EB03 - AREA | EB05 - DISCIPLINE | EB04 - CLASS | EB11 - FLAG | EB00 - EPC | EB08 - TAG | EB10 - KEY | EB12 - TEMP |
| --- | --- | --- | --- | --- | --- | --- | --- | --- | --- | --- | --- | --- | --- | --- | --- | --- | --- | --- | --- | --- | --- | --- | --- | --- | --- | --- | --- | --- | --- | --- | --- | --- | --- | --- |
|  | T1 | **Commissioning** |  |  |  |  |  |  |  |  |  |  |  |  |  |  |  |  |  |  |  |  |  |  |  |  |  |  |  |  |  |  |  |  |
|  | CK | **Home Office Construction** |  |  |  |  |  |  |  |  |  |  |  |  |  |  |  |  |  |  |  |  |  |  |  |  |  |  |  |  |  |  |  |  |
|  | CN | **Project Completion** |  |  |  |  |  |  |  |  |  |  |  |  |  |  |  |  |  |  |  |  |  |  |  |  |  |  |  |  |  |  |  |  |
|  | CS | **Plant Services** |  |  |  |  |  |  |  |  |  |  |  |  |  |  |  |  |  |  |  |  |  |  |  |  |  |  |  |  |  |  |  |  |
|  | D0 | **Demolition** |  |  |  |  |  |  |  |  |  |  |  |  |  |  |  |  |  |  |  |  |  |  |  |  |  |  |  |  |  |  |  |  |
|  | PL | **Pipeline** |  |  |  |  |  |  |  |  |  |  |  |  |  |  |  |  |  |  |  |  |  |  |  |  |  |  |  |  |  |  |  |  |
|  | X0 | **Fire & Safety** |  |  |  |  |  |  |  |  |  |  |  |  |  |  |  |  |  |  |  |  |  |  |  |  |  |  |  |  |  |  |  |  |
|  | 02 | **Ammonia Plant** |  |  | 2006-04-20 | 2008-04-28 |  |  |  |  |  |  |  |  |  |  |  |  |  |  |  |  |  |  |  |  |  |  |  |  |  |  |  |  |
|  | C0 | **Concrete / Piling** |  |  | 2006-04-20 | 2007-04-22 |  |  |  |  |  |  |  |  |  |  |  |  |  |  |  |  |  |  |  |  |  |  |  |  |  |  |  |  |
| CO02HC0140 |  | 02H Form Pour Strip Fnds - Structure |  | 25d | 2006-04-20 A | 2006-10-31 A | EM02HCV128 | 100% |  | 2006-04-20 | 2006-05-18 |  |  |  |  | EBWK 6 Day Egypt Holidays |  | 2006-07-29 | 140 | 0 | 0 | 02H | C0140 | 02 | CO | 1C1 | 02H | C0 | C | PS | C |  |  |  |
| WO020C0100 |  | 020 Concrete & Excavation | WBS summary | 291d | 2006-04-20 A | 2007-04-22 | EK000YA000 | 75% | 74d |  |  | 215d | 596d |  |  | EBWK 6 Day Egypt Holidays | Concrete and Paving - Construction [263733 h] | 2006-07-29 | C00 | 0 | 0 | 02A | C0C00 | 02 | CO | 1C1 | 020 | C0 | C | WC | C |  |  |  |
| CO02JC0150 |  | 02J Form, Pour, Strip Fnd - 104-D2 (Low Temp Shift Converter) |  | 18d | 2006-04-30 A | 2006-12-07 A | XE000K0110, EM02JCV164, EM02JCV128, CO000K0110 SS | 100% |  | 2006-07-12 | 2006-08-01 |  |  |  |  | EBWK 6 Day Egypt Holidays |  | 2006-07-29 | 150 | 0 | 0 | 02J | C0150 | 02 | CO | 1C1 | 02J | C0 | C | PS | C | 104D2 |  |  |
| CO02JC0160 |  | 02J Form, Pour, Strip Fnd - 104-D1 (High Temp Shift Converter) |  | 18d | 2006-04-30 A | 2006-12-26 A | CO02JC0150 SS | 100% |  | 2006-05-04 | 2006-05-24 |  |  |  |  | EBWK 6 Day Egypt Holidays |  | 2006-07-29 | 160 | 0 | 0 | 02J | C0160 | 02 | CO | 1C1 | 02J | C0 | C | PS | C | 104D1 |  |  |
| CO02JC0110 |  | 02J Form, Pour, Strip Fnds - Major Fnds Gen'l |  | 18d | 2006-05-01 A | 2006-08-16 A | XE000K0110, EM02JCV164 FS+30d, CO02JC0150 SS | 100% |  | 2006-05-01 | 2006-05-21 |  |  |  |  | EBWK 6 Day Egypt Holidays |  | 2006-07-29 | 110 | 0 | 0 | 02J | C0110 | 02 | CO | 1C1 | 02J | C0 | C |  | C |  |  |  |
| CO02LC0150 |  | 02L Form, Pour, Strip Fnd - 101-E (CO2 Absorber) |  | 24d | 2006-05-03 A | 2006-09-18 A | XE000K0110 SS, EM02LCV164 SS, CO000K0110 SS | 100% |  | 2006-05-03 | 2006-05-30 |  |  |  |  | EBWK 6 Day Egypt Holidays |  | 2006-07-29 | 150 | 0 | 0 |  |  | 02 | CO | 1C1 | 02L | C0 | C | PS | C | 101E |  |  |
| CO02MC0110 |  | 02M Form, Pour, Strip Fnds - Major Fnds Gen'l |  | 18d | 2006-05-03 A | 2006-09-30 A | XE000K0110, CO02MC0140 SS+6d, EM02MCV164 FS+30d | 100% |  | 2006-05-03 | 2006-05-23 |  |  |  |  | EBWK 6 Day Egypt Holidays |  | 2006-07-29 | 110 | 0 | 0 | 02M | C0110 | 02 | CO | 1C1 | 02M | C0 | C |  | C |  |  |  |
| CO02MC0140 |  | 02M Form Pour Strip Fnds - Structure |  | 24d | 2006-05-03 A | 2007-01-11 A | EM02MCV128 FF+12d | 100% |  | 2006-05-03 | 2006-05-30 |  |  |  |  | EBWK 6 Day Egypt Holidays |  | 2006-07-29 | 140 | 0 | 0 | 02M | C0140 | 02 | CO | 1C1 | 02M | C0 | C | PS | C |  |  |  |
| CO02KC0150 |  | 02K Form, Pour, Strip Fnd - 114-F (Benfield Solution Tank) |  | 18d | 2006-05-04 A | 2006-08-22 A | XE000K0110, EM02KCV164 SS, CO000K0108 SS, EK02KCV000 | 100% |  | 2006-05-04 | 2006-05-24 |  |  |  |  | EBWK 6 Day Egypt Holidays |  | 2006-07-29 | 150 | 0 | 0 | 02K | C0150 | 02 | CO | 1C1 | 02K | C0 | C | PS | C | 114F | T | X |
| CO02BC0110 |  | 02B Form, Pour, Strip Fnds - Major Fnds |  | 30d | 2006-05-09 A | 2006-08-08 A | XE000K0110, EM02BCV164 FS+30d, CO000K0110 SS | 100% |  | 2006-05-09 | 2006-06-12 |  |  |  |  | EBWK 6 Day Egypt Holidays |  | 2006-07-29 | 110 | 0 | 0 | 02B | C0110 | 02 | CO | 1C1 | 02B | C0 | C |  | C |  |  |  |
| CO02AC0110 |  | 02A Form, Pour, Strip Fnds - Major Fnds |  | 20d | 2006-05-15 A | 2007-04-08 | XE000K0110, EM02ACV164 FS+20d, CO000K0110 SS, EM02ACV128 FS+30d |  | 62d | 2006-05-15 | 2006-06-06 | 189d | 0d |  | 2007-04-08 | EBWK 6 Day Egypt Holidays |  | 2006-07-29 | 110 | 0 | 0 | 02A | C0110 | 02 | CO | 1C1 | 02A | C0 | C |  | C |  |  |  |
| CO02HC0150 |  | 02H Form, Pour, Strip Fnd - 103-D (Secondary Reformer) |  | 30d | 2006-05-21 A | 2006-08-22 A | XE000K0110, EM02HCV164 SS, CO000K0110 SS | 100% |  | 2006-05-21 | 2006-06-24 |  |  |  |  | EBWK 6 Day Egypt Holidays |  | 2006-07-29 | 150 | 0 | 0 | 02H | C0150 | 02 | CO | 1C1 | 02H | C0 | C | PS | C | 103D |  |  |
| CO02YC0140 |  | 02Y Form Pour Strip Fnds - Pipe Rack |  | 78d | 2006-05-27 A | 2006-12-03 A | EM02YCV133 SS, CO000K0110 SS, EMO2YCV124 SS | 100% |  | 2006-05-27 | 2006-08-24 |  |  |  |  | EBWK 6 Day Egypt Holidays |  | 2006-07-29 | 140 | 0 | 0 | 02Y | C0140 | 02 | CO | 1C1 | 02Y | C0 | C | PS | C |  |  |  |
| CO02MC0150 |  | 02M Form, Pour, Strip Fnd - 105-D (Ammonia Synthesis Converter) |  | 24d | 2006-05-29 A | 2006-09-11 A | XE000K0110, EM02MCV164 SS+30d, CO000K0110 SS | 100% |  | 2006-05-29 | 2006-06-25 |  |  |  |  | EBWK 6 Day Egypt Holidays |  | 2006-07-29 | 150 | 0 | 0 | 02M | C0150 | 02 | CO | 1C1 | 02M | C0 | C | PS | C | 105D |  |  |
| CO02DC0110 |  | 02D Form, Pour, Strip Fnds - Major Fnds |  | 39d | 2006-06-11 A | 2007-02-08 | XE000K0110, EM02DCV164, CO000K0110 SS, EM02DCV128 | 69% | 12d | 2006-06-11 | 2006-07-25 | 252d | 0d |  | 2007-02-08 | EBWK 6 Day Egypt Holidays |  | 2006-07-29 | 110 | 0 | 0 | 02D | C0110 | 02 | CO | 1C1 | 02D | C0 | C |  | C |  |  |  |
| CO02LC0110 |  | 02L Form, Pour, Strip Fnds - Major Fnds Gen'l |  | 24d | 2006-06-18 A | 2007-02-28 | XE000K0110, EM02LCV164 FS+12d |  | 29d | 2006-06-18 | 2006-07-15 | 123d | 0d |  | 2007-02-28 | EBWK 6 Day Egypt Holidays |  | 2006-07-29 | 110 | 0 | 0 |  |  | 02 | CO | 1C1 | 02L | C0 | C |  | C |  |  |  |
| CO02LC0160 |  | 02L Form, Pour, Strip Fnd - 102-E (CO2 Stripper) |  | 35d | 2006-06-18 A | 2006-11-26 A | CO02LC0150 SS+6d | 100% |  | 2006-06-18 | 2006-07-27 |  |  |  |  | EBWK 6 Day Egypt Holidays |  | 2006-07-29 | 160 | 0 | 0 |  |  | 02 | CO | 1C1 | 02L | C0 | C | PS | C | 102E |  |  |
| CO02EC0110 |  | 02E Form, Pour, Strip Fnds - Major Fnds Gen'l |  | 33d | 2006-06-24 A | 2006-11-06 A | XE000K0110, EM02ECV164 FS+30d, CO000K0110 SS | 100% |  | 2006-09-25 | 2006-11-22 |  |  |  |  | EBWK 6 Day Egypt Holidays |  | 2006-07-29 | 110 | 0 | 0 | 02E | C0110 | 02 | CO | 1C1 | 02E | C0 | C |  | C |  |  |  |
| CO02CC0110 |  | 02C Form, Pour, Strip Fnds - Major Fnds Gen'l |  | 36d | 2006-06-24 A | 2007-02-25 | XE000K0110, EM02CCV164 FS+30d, CO000K0110 SS, EM02CCV128 | 28% | 26d | 2006-06-24 | 2006-08-03 | 165d | 0d |  | 2007-02-25 | EBWK 6 Day Egypt Holidays |  | 2006-07-29 | 110 | 0 | 0 | 02C | C0110 | 02 | CO | 1C1 | 02C | C0 | C |  | C |  |  |  |
| CO02EC0140 |  | 02E Form Pour Strip Fnds - Structure |  | 18d | 2006-06-24 A | 2006-09-12 A | EM02ECV128 FS+30d, CO02EC0110 SS | 100% |  | 2006-06-24 | 2006-07-13 |  |  |  |  | EBWK 6 Day Egypt Holidays |  | 2006-07-29 | 140 | 0 | 0 | 02E | C0140 | 02 | CO | 1C1 | 02E | C0 | C | PS | C |  |  |  |
| CO02FC0110 |  | 02F Form, Pour, Strip Fnds - Major Fnds Gen'l |  | 29d | 2006-06-24 A | 2007-02-28 | XE000K0110, EM02FCV164, CO000K0110 SS |  | 29d | 2006-06-24 | 2006-07-26 | 234d | 0d |  | 2007-02-28 | EBWK 6 Day Egypt Holidays |  | 2006-07-29 | 110 | 0 | 0 | 02F | C0110 | 02 | CO | 1C1 | 02F | C0 | C |  | C |  |  |  |
| CO02HC0110 |  | 02H Form, Pour, Strip Fnds - 101B (Primary Reformer) |  | 78d | 2006-07-06 A | 2006-11-04 A | EM02HCV164 FF+18d, CO02HC0150 SS+12d | 100% |  | 2006-07-09 | 2006-10-28 |  |  |  |  | EBWK 6 Day Egypt Holidays |  | 2006-07-29 | 110 | 0 | 0 | 02H | C0110 | 02 | CO | 1C1 | 02H | C0 | C | PS | C | 101B |  |  |
| CO02HC0160 |  | 02H Form, Pour, Strip Fnd - 156-F (Steam Blowdown Drum) |  | 12d | 2006-07-08 A | 2006-10-10 A | CO02HC0150 SS | 100% |  | 2006-05-20 | 2006-06-01 |  |  |  |  | EBWK 6 Day Egypt Holidays |  | 2006-07-29 | 160 | 0 | 0 | 02H | C0160 | 02 | CO | 1C1 | 02H | C0 | C | PS | C | 156F |  |  |
| CO02NC0110 |  | 02N Form, Pour, Strip Fnds - Major Fnds |  | 30d | 2006-07-25 A | 2006-12-09 A | XE000K0110, EM02NCV164, CO000K0110 SS | 100% |  | 2006-07-25 | 2006-08-28 |  |  |  |  | EBWK 6 Day Egypt Holidays |  | 2006-07-29 | 110 | 0 | 0 | 02N | C0110 | 02 | CO | 1C1 | 02N | C0 | C |  | C |  |  |  |
| CO02CC0160 |  | 02C Form, Pour, Strip Fnd - 103-JTC |  | 24d | 2006-07-29 A | 2006-11-02 A | EM02CCV164 | 100% |  | 2006-07-29 | 2006-08-24 |  |  |  |  | EBWK 6 Day Egypt Holidays |  | 2006-07-29 | 160 | 0 | 0 | 02C | C0160 | 02 | CO | 1C1 | 02C | C0 | C | PS | C | 103JTC |  |  |
| CO02CC0150 |  | 02C Form, Pour, Strip Fnd - 103/105-J & Table Tops |  | 40d | 2006-08-02 A | 2006-12-09 A | XE000K0110, EM02CCV164 FS+30d, CO02CC0110 SS | 100% |  | 2006-09-09 | 2006-11-14 |  |  |  |  | EBWK 6 Day Egypt Holidays |  | 2006-07-29 | 150 | 0 | 0 | 02C | C0150 | 02 | CO | 1C1 | 02C | C0 | C | PS | C |  |  |  |
| CO02KC0110 |  | 02K Form, Pour, Strip Fnds - Major Fnds Gen'l |  | 18d | 2006-08-05 A | 2007-02-28 | XE000K0110, EM02KCV164 FS+30d, CO02KC0150 SS+12d, EM02KPI140 FS+30d, EM02KPI120 SS+35d, CO000K0110 SS+66d, EK02KCV000 FS+30d |  | 29d | 2006-08-26 | 2006-09-14 | 192d | 0d |  | 2007-02-28 | EBWK 6 Day Egypt Holidays |  | 2006-07-29 | 110 | 0 | 0 | 02K | C0110 | 02 | CO | 1C1 | 02K | C0 | C |  | C |  |  |  |
| CO02BC0120 |  | 02B Form, Pour, Strip Fnds - Misc Fnds |  | 12d | 2006-08-08 A | 2006-08-08 A | CO02BC0110, CO02BU4120 | 100% |  | 2007-01-06 | 2007-01-18 |  |  |  |  | EBWK 6 Day Egypt Holidays |  | 2006-07-29 | 120 | 0 | 0 | 02B | C0120 | 02 | CO | 1C2 | 02B | C0 | C |  | C |  |  |  |
| CO02LC0140 |  | 02L Form Pour Strip Fnds - 02L Structure |  | 24d | 2006-08-28 A | 2007-02-28 | CO02LC0150, CO02LC0160 SS, EM02LCV128 FS+30d |  | 29d | 2006-10-04 | 2006-11-15 | 45d | 0d |  | 2007-02-28 | EBWK 6 Day Egypt Holidays |  | 2006-07-29 | 140 | 0 | 0 |  |  | 02 | CO | 1C1 | 02L | C0 | C | PS | C |  |  |  |
| CO02MC0120 |  | 02M Form, Pour, Strip Fnds - Misc Fnds |  | 12d | 2006-09-10 A | 2007-03-14 | CO02MC0110 FF+6d, CO02MU4120, EM02MCV166 FS+20d, EM02MCV167 |  | 12d | 2007-01-25 | 2007-02-07 | 239d | 33d |  |  | EBWK 6 Day Egypt Holidays |  | 2006-07-29 | 120 | 0 | 0 | 02M | C0120 | 02 | CO | 1C2 | 02M | C0 | C |  | C |  |  |  |
| CO02GC0160 |  | 02G Form, Pour, Strip Fnd - 102-J Fd Gas Compr. & Aux. |  | 30d | 2006-09-12 A | 2006-11-29 A | EM02GCV164 SS | 100% |  | 2006-11-18 | 2006-12-21 |  |  |  |  | EBWK 6 Day Egypt Holidays |  | 2006-07-29 | 160 | 0 | 0 | 02G | C0160 | 02 | CO | 1C1 | 02G | C0 | C | PS | C | 102J |  |  |
| CO02GC0110 |  | 02G Form, Pour, Strip Fnds - Major Fnds Gen'l |  | 36d | 2006-10-15 A | 2007-03-28 | XE000K0110 SS+18d, EM02GCV164 FS+19d, EM02GCV128 FS+30d | 17% | 30d | 2007-03-05 | 2007-04-15 | 159d | 0d |  |  | EBWK 6 Day Egypt Holidays |  | 2006-07-29 | 110 | 0 | 0 | 02G | C0110 | 02 | CO | 1C1 | 02G | C0 | C |  | C |  |  |  |
| CO02EC0120 |  | 02E Form, Pour, Strip Fnds - Misc Fnds |  | 12d | 2006-11-02 A | 2007-03-14 | CO02EC0110, CO02EU4120, EM02ECV166 FS+20d, EM02ECV167 |  | 12d | 2007-01-31 | 2007-02-13 | 227d | 33d |  |  | EBWK 6 Day Egypt Holidays |  | 2006-07-29 | 120 | 0 | 0 | 02E | C0120 | 02 | CO | 1C2 | 02E | C0 | C |  | C |  |  |  |
| CO02LC0120 |  | 02L Form, Pour, Strip Fnds - Misc Fnds |  | 18d | 2006-11-16 A | 2007-03-21 | CO02LC0110 FF+12d, CO02LU4120, EM02LCV166 FS+20d, EM02LCV167 |  | 18d | 2007-03-03 | 2007-03-22 | 123d | 0d |  |  | EBWK 6 Day Egypt Holidays |  | 2006-07-29 | 120 | 0 | 0 |  |  | 02 | CO | 1C2 | 02L | C0 | C |  | C |  |  |  |
| CO02FC0120 |  | 02F Form, Pour, Strip Fnds - Misc Fnds |  | 12d | 2006-12-05 A | 2007-03-14 | CO02FC0110, CO02FU4120, EM02FCV166 FS+20d, EM02FCV167 |  | 12d | 2007-03-01 | 2007-03-14 | 234d | 33d |  |  | EBWK 6 Day Egypt Holidays |  | 2006-07-29 | 120 | 0 | 0 | 02F | C0120 | 02 | CO | 1C2 | 02F | C0 | C |  | C |  |  |  |
| CO02GC0150 |  | 02G Form, Pour, Strip Fnd - 101-J/JT & 2ea. Table Tops |  | 60d | 2006-12-25 A | 2007-03-03 | XE000K0110, EM02GCV164 FS+20d, CO000K0110 SS+18d | 48% | 31d | 2007-01-06 | 2007-03-15 | 134d | 0d | start on or after 2006-12-18 | 2007-03-03 | EBWK 6 Day Egypt Holidays |  | 2006-07-29 | 150 | 0 | 0 | 02G | C0150 | 02 | CO | 1C1 | 02G | C0 | C | PS | C | 101J |  |  |
| CO02HC0120 |  | 02H Form, Pour, Strip Fnds - Misc Fnds |  | 18d | 2007-02-15 | 2007-03-07 | CO02HC0110 FF+6d, CO02HU4120 FF+6d, EM02HCV167 |  |  |  |  | 174d | 39d |  |  | EBWK 6 Day Egypt Holidays |  | 2006-07-29 | 120 | 0 | 0 | 02H | C0120 | 02 | CO | 1C2 | 02H | C0 | C |  | C |  |  |  |
| CO02CC0120 |  | 02C Form, Pour, Strip Fnds - Misc Fnds |  | 18d | 2007-03-01 | 2007-03-21 | CO02CC0110, CO02CU4120, EM02CCV167 FS+30d |  |  |  |  | 162d | 0d |  |  | EBWK 6 Day Egypt Holidays |  | 2006-07-29 | 120 | 0 | 0 | 02C | C0120 | 02 | CO | 1C2 | 02C | C0 | C |  | C |  |  |  |
| CO02DC0120 |  | 02D Form, Pour, Strip Fnds - Misc Fnds |  | 12d | 2007-03-01 | 2007-03-01 | CO02DC0110, CO02DU4120, EM02DCV166 FS+20d, EM02DCV167 |  |  | 2007-03-01 | 2007-03-14 | 260d | 0d |  | 2006-12-06 | EBWK 6 Day Egypt Holidays |  | 2006-07-29 | 120 | 0 | 0 | 02D | C0120 | 02 | CO | 1C2 | 02D | C0 | C |  | C |  |  |  |
| CO02JC0120 |  | 02J Form, Pour, Strip Fnds - Misc Fnds |  | 12d | 2007-03-01 | 2007-03-14 | CO02JC0110, CO02JU4120, EM02JCV167 |  |  |  |  | 211d | 33d |  |  | EBWK 6 Day Egypt Holidays |  | 2006-07-29 | 120 | 0 | 0 | 02J | C0120 | 02 | CO | 1C2 | 02J | C0 | C |  | C |  |  |  |
| CO02KC0120 |  | 02K Form, Pour, Strip Fnds - Misc Fnds |  | 12d | 2007-03-01 | 2007-03-14 | CO02KC0110, CO02KU4120, EM02KCV166 FS+20d, EM02KCV167 |  |  |  |  | 214d | 33d |  |  | EBWK 6 Day Egypt Holidays |  | 2006-07-29 | 120 | 0 | 0 | 02K | C0120 | 02 | CO | 1C2 | 02K | C0 | C |  | C |  |  |  |
| CO02GC0120 |  | 02G Form, Pour, Strip Fnds - Misc Fnds |  | 18d | 2007-03-29 | 2007-04-18 | CO02GC0110, CO02GU4120, EM02GCV166 FS+20d, EM02GCV167 FS+30d |  |  |  |  | 165d | 3d |  |  | EBWK 6 Day Egypt Holidays |  | 2006-07-29 | 120 | 0 | 0 | 02G | C0120 | 02 | CO | 1C2 | 02G | C0 | C |  | C |  |  |  |
| CO02AC0120 |  | 02A Form, Pour, Strip Fnds - Misc Fnds |  | 12d | 2007-04-09 | 2007-04-22 | CO02AC0110, CO02AU4120, EM02ACV166 FS+20d, EM02ACV167 |  |  |  |  | 189d | 0d |  |  | EBWK 6 Day Egypt Holidays |  | 2006-07-29 | 120 | 0 | 0 | 02A | C0120 | 02 | CO | 1C2 | 02A | C0 | C |  | C |  |  |  |

| ID | WBS | Activity | Type | Duration | Start | Finish | Predecessors | Complete | Remaining | Planned start | Planned finish | Total float | Free float | Constraint | Expected finish | Calendar | Resources | zData Date | Sequence | PCA Criticality Index | PCA Duration Sensitivity | User Defined Field 1 | User Definer Field 2 | EB02 - UNIT | EB01 - RESP | EB06 - WORK OP | EB03 - AREA | EB05 - DISCIPLINE | EB04 - CLASS | EB12 - TEMP | EB00 - EPC | EB11 - FLAG | EB19 - System | EB09 - IPMS |
| --- | --- | --- | --- | --- | --- | --- | --- | --- | --- | --- | --- | --- | --- | --- | --- | --- | --- | --- | --- | --- | --- | --- | --- | --- | --- | --- | --- | --- | --- | --- | --- | --- | --- | --- |
|  | C1 | **Concrete Paving** |  |  | 2007-03-01 | 2007-06-21 |  |  |  |  |  |  |  |  |  |  |  |  |  |  |  |  |  |  |  |  |  |  |  |  |  |  |  |  |
| CO02YC0130 |  | 02Y Install Paving |  | 40d | 2007-03-01 | 2007-04-16 | CO02YU3110 SS+6d, CO02YC0140 SS+24d, CO02YC0140 FF+18d, CO02YU3110 FF+6d, CO02UP0130 |  |  |  |  | 71d | 88d |  |  | EBWK 6 Day Egypt Holidays |  | 2006-07-29 | 130 | 0 | 0 | 02Y | C0130 | 02 | CO | 1C3 | 02Y | C0 | C | 2Y | C |  |  |  |
| WO020C0110 |  | 020 Concrete Paving | WBS summary | 97d | 2007-03-01 | 2007-06-21 | EK000YA000 |  |  |  |  | 210d | 544d |  |  | EBWK 6 Day Egypt Holidays | Concrete and Paving - Construction [56600.2 h] | 2006-07-29 | C00 | 0 | 0 | 02A | C0C00 | 02 | CO | 1C3 | 020 | C0 | C |  | C | WC |  |  |
| CO02CC0130 |  | 02C Install Paving |  | 12d | 2007-03-22 | 2007-04-04 | CO02CC0120, CO02CU3110 |  |  |  |  | 162d | 74d |  |  | EBWK 6 Day Egypt Holidays |  | 2006-07-29 | 130 | 0 | 0 | 02C | C0130 | 02 | CO | 1C3 | 02C | C0 | C |  | C |  |  |  |
| CO02LC0130 |  | 02L Install Paving |  | 12d | 2007-03-22 | 2007-04-04 | CO02LC0120, CO02LU3110 |  |  |  |  | 123d | 78d |  |  | EBWK 6 Day Egypt Holidays |  | 2006-07-29 | 130 | 0 | 0 |  |  | 02 | CO | 1C3 | 02L | C0 | C |  | C |  |  |  |
| CO02GC0130 |  | 02G Install Paving |  | 12d | 2007-04-12 | 2007-04-25 | CO02GC0120 FF, CO02GU3110, CO02GC0150, CO02GC0160, CO02GC0110 |  |  |  |  | 159d | 51d |  |  | EBWK 6 Day Egypt Holidays |  | 2006-07-29 | 130 | 0 | 0 | 02G | C0130 | 02 | CO | 1C3 | 02G | C0 | C |  | C |  |  |  |
| CO02AC0130 |  | 02A Install Paving |  | 6d | 2007-04-23 | 2007-04-29 | CO02AC0120, CO02AU3110 |  |  |  |  | 189d | 81d |  |  | EBWK 6 Day Egypt Holidays |  | 2006-07-29 | 130 | 0 | 0 | 02A | C0130 | 02 | CO | 1C3 | 02A | C0 | C |  | C |  |  |  |
| CO02HC0130 |  | 02H Install Paving |  | 12d | 2007-05-03 | 2007-05-16 | CO02HC0120 FF+6d, CO02HU3110, CO02HM0210 |  |  |  |  | 120d | 105d |  |  | EBWK 6 Day Egypt Holidays |  | 2006-07-29 | 130 | 0 | 0 | 02H | C0130 | 02 | CO | 1C3 | 02H | C0 | C |  | C |  |  |  |
| CO02JC0130 |  | 02J Install Paving |  | 6d | 2007-05-05 | 2007-05-10 | CO02JC0120, CO02JU3110 |  |  |  |  | 168d | 53d | start on or after 2007-05-05 |  | EBWK 6 Day Egypt Holidays |  | 2006-07-29 | 130 | 0 | 0 | 02J | C0130 | 02 | CO | 1C3 | 02J | C0 | C |  | C |  |  |  |
| CO02KC0130 |  | 02K Install Paving |  | 6d | 2007-05-12 | 2007-05-17 | CO02KC0120, CO02KU3110 |  |  |  |  | 165d | 60d | start on or after 2007-05-12 |  | EBWK 6 Day Egypt Holidays |  | 2006-07-29 | 130 | 0 | 0 | 02K | C0130 | 02 | CO | 1C3 | 02K | C0 | C |  | C |  |  |  |
| CO02EC0130 |  | 02E Install Paving |  | 6d | 2007-05-19 | 2007-05-24 | CO02EC0120, CO02EU3110, CO02EC0140 |  |  |  |  | 172d | 41d | start on or after 2007-05-19 |  | EBWK 6 Day Egypt Holidays |  | 2006-07-29 | 130 | 0 | 0 | 02E | C0130 | 02 | CO | 1C3 | 02E | C0 | C |  | C |  |  |  |
| CO02FC0130 |  | 02F Install Paving |  | 6d | 2007-05-26 | 2007-05-31 | CO02FC0120, CO02FU3110 |  |  |  |  | 173d | 35d | start on or after 2007-05-26 |  | EBWK 6 Day Egypt Holidays |  | 2006-07-29 | 130 | 0 | 0 | 02F | C0130 | 02 | CO | 1C3 | 02F | C0 | C |  | C |  |  |  |
| CO02MC0130 |  | 02M Install Paving |  | 6d | 2007-06-02 | 2007-06-07 | CO02MC0120, CO02MU3110 |  |  |  |  | 172d | 29d | start on or after 2007-06-02 |  | EBWK 6 Day Egypt Holidays |  | 2006-07-29 | 130 | 0 | 0 | 02M | C0130 | 02 | CO | 1C3 | 02M | C0 | C |  | C |  |  |  |
| CO02DC0130 |  | 02D Install Paving |  | 6d | 2007-06-09 | 2007-06-14 | CO02DC0120, CO02DU3110 |  |  |  |  | 175d | 29d | start on or after 2007-06-09 |  | EBWK 6 Day Egypt Holidays |  | 2006-07-29 | 130 | 0 | 0 | 02D | C0130 | 02 | CO | 1C3 | 02D | C0 | C |  | C |  |  |  |
| CO02BC0130 |  | 02B Install Paving |  | 6d | 2007-06-16 | 2007-06-21 | CO02BC0120, CO02BU3110 |  |  |  |  | 210d | 17d | start on or after 2007-06-16 |  | EBWK 6 Day Egypt Holidays |  | 2006-07-29 | 130 | 0 | 0 | 02B | C0130 | 02 | CO | 1C3 | 02B | C0 | C |  | C |  |  |  |
|  | U4 | **U/G Piping** |  |  | 2006-09-22 | 2007-03-28 |  |  |  |  |  |  |  |  |  |  |  |  |  |  |  |  |  |  |  |  |  |  |  |  |  |  |  |  |
| CO02UP0150 |  | 02U LB Pipe Erection (Firewater Piping) |  | 144d | 2006-09-22 A | 2007-03-08 | CK02UU4150 FF+18d, EM02UPI200 | 87% | 19d | 2006-09-25 | 2007-04-07 | 212d | 0d |  | 2007-02-10 | EBWK 6 Day Egypt Holidays |  | 2006-07-29 | 130 | 0 | 0 | 01D | P0130 | 02 | CO | 1U2 | 02U | U4 | U | 2Y | C | PS | FW |  |
| WO020U4100 |  | 020 U/G Piping Installation | WBS summary | 162d | 2006-09-22 A | 2007-03-28 | EK000YA000 | 67% | 53d | 2006-09-25 | 2007-04-28 | 224d | 617d |  |  | EBWK 6 Day Egypt Holidays | U/G Piping - Construction [198164 h] | 2006-07-29 | U40 | 0 | 0 | 02A | U4U40 | 02 | CO | 1U2 | 020 | U4 | U |  | C | WC |  | F |
| CO02UP0130 |  | 02U LB Pipe Erection (CW & Misc Headers) |  | 36d | 2006-11-30 A | 2007-02-28 | CK02UU4110, EM02UPIOWG, EM02UPIFWG, EM02UPICWG, EM02UPICBG, CO02UV1110 | 19% | 29d | 2006-12-02 | 2007-01-18 | 71d | 0d |  | 2007-02-28 | EBWK 6 Day Egypt Holidays |  | 2006-07-29 | 130 | 0 | 0 | 01D | P0130 | 02 | CO | 1U2 | 02U | U4 | U | 2Y | C | PS | CW |  |
| CO02AU4120 |  | 02A U/G Piping Installation |  | 30d | 2006-12-20 A | 2007-02-28 | CO02AC0110 SS, CK02AU4110 FS+30d, CO02UP0130 SS+18d | 3% | 29d | 2007-01-06 | 2007-02-08 | 222d | 0d |  | 2007-02-28 | EBWK 6 Day Egypt Holidays |  | 2006-07-29 | 120 | 0 | 0 | 02A | U4120 | 02 | CO | 1U2 | 02A | U4 | U |  | C | PS |  |  |
| CO02BU4120 |  | 02B U/G Piping Installation |  | 6d | 2006-12-20 A | 2007-02-28 | CO02BC0110 FF, CK02BU4110 FS+30d, CO02UP0130 SS+18d |  | 29d | 2007-01-06 | 2007-01-11 | 219d | 0d |  | 2007-02-28 | EBWK 6 Day Egypt Holidays |  | 2006-07-29 | 120 | 0 | 0 | 02B | U4120 | 02 | CO | 1U2 | 02B | U4 | U |  | C |  |  |  |
| CO02CU4120 |  | 02C U/G Piping Installation |  | 52d | 2006-12-20 A | 2007-02-28 | CO02CC0110 FF, CK02CU4110 SS+30d, CO02UP0130 SS+18d | 44% | 29d | 2007-01-06 | 2007-03-06 | 162d | 0d |  | 2007-02-28 | EBWK 6 Day Egypt Holidays |  | 2006-07-29 | 120 | 0 | 0 | 02C | U4120 | 02 | CO | 1U2 | 02C | U4 | U |  | C | PS |  |  |
| CO02DU4120 |  | 02D U/G Piping Installation |  | 20d | 2006-12-20 A | 2007-02-28 | CO02DC0110 FF, CK02DU4110 FF+12d, CO02UP0130 SS+18d |  | 29d | 2007-02-25 | 2007-03-19 | 248d | 0d |  | 2007-02-28 | EBWK 6 Day Egypt Holidays |  | 2006-07-29 | 120 | 0 | 0 | 02D | U4120 | 02 | CO | 1U2 | 02D | U4 | U |  | C | PS |  |  |
| CO02EU4120 |  | 02E U/G Piping Installation |  | 28d | 2006-12-20 A | 2007-02-28 | CO02EC0110 FF, CK02EU4110 FF+12d, CO02UP0130 SS+18d |  | 29d | 2007-02-25 | 2007-03-28 | 227d | 0d |  | 2007-02-28 | EBWK 6 Day Egypt Holidays |  | 2006-07-29 | 120 | 0 | 0 | 02E | U4120 | 02 | CO | 1U2 | 02E | U4 | U |  | C | PS |  |  |
| CO02FU4120 |  | 02F U/G Piping Installation |  | 25d | 2006-12-20 A | 2007-02-28 | CO02FC0110 FF, CK02FU4110 FF+12d, CO02UP0130 SS+18d |  | 29d | 2007-02-25 | 2007-03-25 | 234d | 0d |  | 2007-02-28 | EBWK 6 Day Egypt Holidays |  | 2006-07-29 | 120 | 0 | 0 | 02F | U4120 | 02 | CO | 1U2 | 02F | U4 | U |  | C | PS |  |  |
| CO02GU4120 |  | 02G U/G Piping Installation |  | 45d | 2006-12-20 A | 2007-03-28 | CO02GC0110 FF, CK02GU4110 FF+12d, CO02UP0130 SS+18d |  | 45d | 2007-02-19 | 2007-04-11 | 159d | 0d |  | 2007-02-28 | EBWK 6 Day Egypt Holidays |  | 2006-07-29 | 120 | 0 | 0 | 02G | U4120 | 02 | CO | 1U2 | 02G | U4 | U |  | C | C |  |  |
| CO02HU4120 |  | 02H U/G Piping Installation |  | 54d | 2006-12-20 A | 2007-02-28 | CO02HC0110 FF, CK02HU4110 FF+12d, CO02UP0130 SS+18d | 46% | 29d | 2007-02-25 | 2007-04-28 | 162d | 0d |  | 2007-02-28 | EBWK 6 Day Egypt Holidays |  | 2006-07-29 | 120 | 0 | 0 | 02H | U4120 | 02 | CO | 1U2 | 02H | U4 | U |  | C | PS |  |  |
| CO02JU4120 |  | 02J U/G Piping Installation |  | 34d | 2006-12-20 A | 2007-02-28 | CO02JC0110 FF, CK02JU4110 FF+12d, CO02UP0130 SS+18d | 15% | 29d | 2007-01-06 | 2007-02-13 | 211d | 0d |  | 2007-02-28 | EBWK 6 Day Egypt Holidays |  | 2006-07-29 | 120 | 0 | 0 | 02J | U4120 | 02 | CO | 1U2 | 02J | U4 | U |  | C | PS |  |  |
| CO02KU4120 |  | 02K U/G Piping Installation |  | 32d | 2006-12-20 A | 2007-02-28 | CO02KC0110 FF, CK02KU4110 FF+12d, CO02UP0130 SS+18d | 9% | 29d | 2007-02-25 | 2007-04-02 | 214d | 0d |  | 2007-02-28 | EBWK 6 Day Egypt Holidays |  | 2006-07-29 | 120 | 0 | 0 | 02K | U4120 | 02 | CO | 1U2 | 02K | U4 | U |  | C | PS |  |  |
| CO02MU4120 |  | 02M U/G Piping Installation |  | 23d | 2006-12-20 A | 2007-02-28 | CO02MC0110 FF, CK02MU4110 FF+12d, CO02UP0130 SS+18d |  | 29d | 2007-01-06 | 2007-01-31 | 239d | 0d |  | 2007-02-28 | EBWK 6 Day Egypt Holidays |  | 2006-07-29 | 120 | 0 | 0 | 02M | U4120 | 02 | CO | 1U2 | 02M | U4 | U |  | C | PS |  |  |
| CO02LU4120 |  | 02L U/G Piping Installation |  | 24d | 2007-02-01 | 2007-02-28 | CO02LC0110 FF, CK02LU4110 FF+30d, CO02UP0130 SS+18d |  |  |  |  | 123d | 0d | finish on or after 2007-02-28 |  | EBWK 6 Day Egypt Holidays |  | 2006-07-29 | 120 | 0 | 0 |  |  | 02 | CO | 1U2 | 02L | U4 | U |  | C | PS |  |  |

Notes:
- CO02BC0130: P3 Activity Log Info: Changed Successor due to out of / sequence work. Equipment was set prior to paving. Deleted Eqp / erection and added Piping Erection (which was a successor to / Equipment).
- CO02UP0150: P3 Activity Log Info: Plant L.O. thru start erection of pipe 58 / weeks
- CO02UP0130: P3 Activity Log Info: Plant L.O. thru start erection of pipe 58 / weeks
- CO02AU4120: P3 Activity Log Info: Need to tie to material / deliveries
- CO02BU4120: P3 Activity Log Info: Need to tie to material / deliveries
- CO02CU4120: P3 Activity Log Info: Need to tie to material / deliveries
- CO02DU4120: P3 Activity Log Info: Need to tie to material / deliveries
- CO02EU4120: P3 Activity Log Info: Need to tie to material / deliveries
- CO02FU4120: P3 Activity Log Info: Need to tie to material / deliveries
- CO02GU4120: P3 Activity Log Info: Need to tie to material / deliveries
- CO02HU4120: P3 Activity Log Info: Need to tie to material / deliveries
- CO02JU4120: P3 Activity Log Info: Need to tie to material / deliveries
- CO02KU4120: P3 Activity Log Info: Need to tie to material / deliveries
- CO02MU4120: P3 Activity Log Info: Need to tie to material / deliveries
- CO02LU4120: P3 Activity Log Info: Need to tie to material / deliveries

| ID | WBS | Activity | Type | Duration | Start | Finish | Predecessors | Complete | Remaining | Planned start | Planned finish | Total float | Free float | Constraint | Expected finish | Calendar | Resources | zData Date | Sequence | PCA Criticality Index | PCA Duration Sensitivity | User Defined Field 1 | User Definer Field 2 | user_number1 | EB02 - UNIT | EB01 - RESP | EB06 - WORK OP | EB03 - AREA | EB05 - DISCIPLINE | EB04 - CLASS | EB11 - FLAG | EB00 - EPC | EB12 - TEMP | Optimistic Duration | Most Likely Duration | Pessimistic Duration | EB07 - REQN | EB22 - Critical Actvities | EB08 - TAG | user_integer2 |
| --- | --- | --- | --- | --- | --- | --- | --- | --- | --- | --- | --- | --- | --- | --- | --- | --- | --- | --- | --- | --- | --- | --- | --- | --- | --- | --- | --- | --- | --- | --- | --- | --- | --- | --- | --- | --- | --- | --- | --- | --- |
|  | U3 | **U/G Electrical** |  |  | 2006-12-23 | 2007-04-11 |  |  |  |  |  |  |  |  |  |  |  |  |  |  |  |  |  |  |  |  |  |  |  |  |  |  |  |  |  |  |  |  |  |  |
| CO02EU3110 |  | 02E U/G Earthing Installation |  | 14d | 2006-12-23 A | 2007-03-14 | CO02EU4120 FF+12d, EM020ELEH2 FS+30d |  | 14d | 2007-02-27 | 2007-03-14 | 227d | 55d |  |  | EBWK 6 Day Egypt Holidays |  | 2006-07-29 | 110 | 0 | 0 | 02E | U3110 | -13 | 02 | CO | 1U3 | 02E | U3 | U | C | C |  |  |  |  |  |  |  |  |
| CO02GU3110 |  | 02G U/G Earthing Installation |  | 23d | 2006-12-23 A | 2007-04-11 | CO02GU4120 FF+12d, EM020ELEH2 FS+30d |  | 23d | 2007-03-24 | 2007-04-18 | 159d | 0d |  |  | EBWK 6 Day Egypt Holidays |  | 2006-07-29 | 110 | 0 | 0 | 02G | U3110 | 15 | 02 | CO | 1U3 | 02G | U3 | U | C | C |  |  |  |  |  |  |  |  |
| CO02HU3110 |  | 02H U/G Earthing Installation |  | 27d | 2006-12-23 A | 2007-03-14 | CO02HU4120 FF+12d, EM020ELEH2 FS+30d |  | 27d | 2007-02-12 | 2007-03-14 | 162d | 42d |  |  | EBWK 6 Day Egypt Holidays |  | 2006-07-29 | 110 | 0 | 0 | 02H | U3110 | 0 | 02 | CO | 1U3 | 02H | U3 | U | C | C |  |  |  |  |  |  |  |  |
| CO02JU3110 |  | 02J U/G Earthing Installation |  | 17d | 2006-12-23 A | 2007-03-14 | CO02JU4120 FF+12d, EM020ELEH2 FS+30d |  | 17d | 2007-02-24 | 2007-03-14 | 211d | 43d |  |  | EBWK 6 Day Egypt Holidays |  | 2006-07-29 | 110 | 0 | 0 | 02J | U3110 | 0 | 02 | CO | 1U3 | 02J | U3 | U | C | C |  |  |  |  |  |  |  |  |
| CO02LU3110 |  | 02L U/G Earthing Installation |  | 24d | 2006-12-23 A | 2007-03-14 | CO02LU4120 FF+12d, EM020ELEH2 FS+30d |  | 24d | 2007-02-15 | 2007-03-14 | 129d | 6d |  |  | EBWK 6 Day Egypt Holidays |  | 2006-07-29 | 110 | 0 | 0 |  |  | 0 | 02 | CO | 1U3 | 02L | U3 | U | C | C |  |  |  |  |  |  |  |  |
| CO02MU3110 |  | 02M U/G Earthing Installation |  | 12d | 2006-12-23 A | 2007-03-14 | CO02MU4120 FF+12d, EM020ELEH2 FS+30d |  | 12d | 2007-03-01 | 2007-03-14 | 239d | 67d |  |  | EBWK 6 Day Egypt Holidays |  | 2006-07-29 | 110 | 0 | 0 | 02M | U3110 | 0 | 02 | CO | 1U3 | 02M | U3 | U | C | C |  |  |  |  |  |  |  |  |
| CO02YU3110 |  | 02Y U/G Earthing Installation |  | 60d | 2006-12-23 A | 2007-02-28 | CO02YC0140 FF, EM020ELEH2 FS+30d | 52% | 29d | 2007-01-06 | 2007-03-15 | 100d | 0d |  | 2007-02-28 | EBWK 6 Day Egypt Holidays |  | 2006-07-29 | 110 | 0 | 0 | 02Y | U3110 | 15 | 02 | CO | 1U3 | 02Y | U3 | U | C | C | 2Y |  |  |  |  |  |  |  |
| WO020U3100 |  | 020 Install U/G Electrical | WBS summary | 89d | 2006-12-23 A | 2007-04-11 | EK000YA000 | 27% | 65d | 2007-01-06 | 2007-04-18 | 265d | 605d |  |  | EBWK 6 Day Egypt Holidays | U/G Piping - Construction [5830.98 h] | 2006-07-29 | U30 | 0 | 0 | 02A | U3U30 |  | 02 | CO | U30 | 020 | U3 | U | WC | C |  |  |  |  |  |  |  |  |
| CO02CU3110 |  | 02C U/G Earthing Installation |  | 26d | 2007-02-13 | 2007-03-14 | CO02CU4120 FF+12d, EM020ELEH2 FS+30d |  |  |  |  | 168d | 6d |  |  | EBWK 6 Day Egypt Holidays |  | 2006-07-29 | 110 | 0 | 0 | 02C | U3110 | 0 | 02 | CO | 1U3 | 02C | U3 | U | C | C |  |  |  |  |  |  |  |  |
| CO02AU3110 |  | 02A U/G Earthing Installation |  | 15d | 2007-02-19 | 2007-03-07 | CO02AU4120 FF+6d, EM020ELEH2 FS+30d |  |  |  |  | 228d | 39d |  |  | EBWK 6 Day Egypt Holidays |  | 2006-07-29 | 110 | 0 | 0 | 02A | U3110 | -2 | 02 | CO | 1U3 | 02A | U3 | U | C | C |  |  |  |  |  |  |  |  |
| CO02KU3110 |  | 02K U/G Earthing Installation |  | 16d | 2007-02-25 | 2007-03-14 | CO02KU4120 FF+12d, EM020ELEH2 FS+30d |  |  |  |  | 214d | 49d |  |  | EBWK 6 Day Egypt Holidays |  | 2006-07-29 | 110 | 0 | 0 | 02K | U3110 | 0 | 02 | CO | 1U3 | 02K | U3 | U | C | C |  |  |  |  |  |  |  |  |
| CO02FU3110 |  | 02F U/G Earthing Installation |  | 13d | 2007-02-28 | 2007-03-14 | CO02FU4120 FF+12d, EM020ELEH2 FS+30d |  |  |  |  | 234d | 61d |  |  | EBWK 6 Day Egypt Holidays |  | 2006-07-29 | 110 | 0 | 0 | 02F | U3110 | 0 | 02 | CO | 1U3 | 02F | U3 | U | C | C |  |  |  |  |  |  |  |  |
| CO02DU3110 |  | 02D U/G Earthing Installation |  | 10d | 2007-03-04 | 2007-03-14 | CO02DU4120 FF+12d, EM020ELEH2 FS+30d |  |  |  |  | 248d | 73d |  |  | EBWK 6 Day Egypt Holidays |  | 2006-07-29 | 110 | 0 | 0 | 02D | U3110 | -9 | 02 | CO | 1U3 | 02D | U3 | U | C | C |  |  |  |  |  |  |  |  |
| CO02BU3110 |  | 02B U/G Earthing Installation |  | 3d | 2007-03-12 | 2007-03-14 | CO02BU4120 FF+12d, EM020ELEH2 FS+30d |  |  |  |  | 289d | 79d |  |  | EBWK 6 Day Egypt Holidays |  | 2006-07-29 | 110 | 0 | 0 | 02B | U3110 | 1 | 02 | CO | 1U3 | 02B | U3 | U |  | C |  |  |  |  |  |  |  |  |
|  | A0 | **Buildings** |  |  |  |  |  |  |  |  |  |  |  |  |  |  |  |  |  |  |  |  |  |  |  |  |  |  |  |  |  |  |  |  |  |  |  |  |  |  |
|  | S0 | **Structural / Misc. Steel** |  |  | 2007-02-11 | 2007-11-06 |  |  |  |  |  |  |  |  |  |  |  |  |  |  |  |  |  |  |  |  |  |  |  |  |  |  |  |  |  |  |  |  |  |  |
| CO02YS0110 |  | 02Y Erect Structural Steel - Pipe Rack |  | 132d | 2007-02-11 | 2007-07-14 | CO02YC0140 SS+36d, EM02YCV122 FS+30d, PO02YS0000 FF+65d, EM02YCV123, P002YS0010 FS+12d |  |  |  |  | -35d | 0d | start on or after 2007-02-11 |  | EBWK 6 Day Egypt Holidays |  | 2006-07-29 | 120 | 29.5 | 2.8 | 02Y | S0120 | 12 | 02 | CO | 1S1 | 02Y | S0 | S | C | C | 2Y | 122 | 132 | 137 | B1040 | C3 |  |  |
| WO020S0100 |  | 020 Erect Steel | WBS summary | 212d | 2007-02-11 A | 2007-11-06 | EK000YA000 |  | 212d |  |  | 69d | 445d |  |  | EBWK 6 Day Egypt Holidays | Structural Steel - Construction [97055.1 h] | 2006-07-29 | S00 | 0 | 0 | 02A | S0S00 |  | 02 | CO | 1S1 | 020 | S0 | S | WC | C |  |  |  |  |  |  |  |  |
| CO02JS0130 |  | 02J Pre-Install Misc Steel - 104-D2 |  | 12d | 2007-03-31 | 2007-04-14 | PK02JMD32Z |  |  |  |  | 103d | 47d |  |  | EBWK 6 Day Egypt Holidays |  | 2006-07-29 | 130 | 0 | 0 | 02J | S0130 | -48 | 02 | CO | 1S2 | 02J | S0 | S | C | C |  |  |  |  | B1040 |  | 104D2 |  |
| CO02JS0140 |  | 02J Pre-Install Misc Steel - 104-D1 |  | 12d | 2007-03-31 | 2007-04-14 | PK02JMD32Z |  |  |  |  | 108d | 52d |  |  | EBWK 6 Day Egypt Holidays |  | 2006-07-29 | 140 | 0 | 0 | 02J | S0140 | -48 | 02 | CO | 1S2 | 02J | S0 | S | C | C |  |  |  |  | B1040 |  | 104D1 |  |
| CO02LS0130 |  | 02L Pre-Install Misc Steel - 101-E |  | 12d | 2007-03-31 | 2007-04-14 | PK02LMD21Z |  |  |  |  | 113d | 57d |  |  | EBWK 6 Day Egypt Holidays |  | 2006-07-29 | 130 | 0 | 0 |  |  | -68 | 02 | CO | 1S2 | 02L | S0 | S | C | C |  |  |  |  | B1040 |  | 101E |  |
| CO02YS0120 |  | 02Y Erect Misc Steel - Pipe Rack |  | 75d | 2007-04-18 | 2007-07-14 | CO02YS0110 FF, CO02YS0110 SS+36d |  |  |  |  | 102d | 12d |  |  | EBWK 6 Day Egypt Holidays |  | 2006-07-29 | 120 | 0 | 0 | 02Y | S0120 | 12 | 02 | CO | 1S2 | 02Y | S0 | S | C | C |  |  |  |  | B1040 |  |  |  |
| CO02HS0140 |  | 02H Install Misc Steel - 156-F |  | 12d | 2007-04-26 | 2007-05-09 | PK02HMD45Z, PO02HS0010, CO02HM0140 |  |  |  |  | 102d | 92d |  |  | EBWK 6 Day Egypt Holidays |  | 2006-07-29 | 140 | 0 | 0 | 02H | S0140 | 195.99791666 | 02 | CO | 1S2 | 02H | S0 | S | C | C |  |  |  |  | B1040 |  | 156F |  |
| CO02HS0130 |  | 02H Pre-Install Misc Steel - 103-D |  | 12d | 2007-05-05 | 2007-05-19 | PK02HMD31Z |  |  |  |  | 68d | 12d |  |  | EBWK 6 Day Egypt Holidays |  | 2006-07-29 | 130 | 0 | 0 | 02H | S0130 | -19.00208333 | 02 | CO | 1S2 | 02H | S0 | S | C | C |  |  |  |  | B1040 |  | 103D |  |
| CO02LS0110 |  | 02L Erect Structure |  | 60d | 2007-05-10 | 2007-07-18 | PO02LS0000 FS+30d, EM02LCV122 FS+30d, CO02LC0140 |  |  |  |  | -15d | 0d |  |  | EBWK 6 Day Egypt Holidays |  | 2006-07-29 | 110 | 4.3 | 1 |  |  | 10 | 02 | CO | 1S1 | 02L | S0 | S | C | C |  | 32 | 36 | 40 | B1040 |  |  |  |
| CO02LS0140 |  | 02L Pre-Install Misc Steel - 102-E |  | 12d | 2007-05-19 | 2007-06-02 | PK02LMD21Y |  |  |  |  | 76d | 20d |  |  | EBWK 6 Day Egypt Holidays |  | 2006-07-29 | 140 | 0 | 0 |  |  | -30 | 02 | CO | 1S2 | 02L | S0 | S | C | C |  |  |  |  | B1040 |  | 102E |  |
| CO02MS0110 |  | 02M Erect Structural Steel - Structure |  | 18d | 2007-05-24 | 2007-06-13 | PO02MS0000 FS+30d, EM02MCV122 FS+30d, CO02MC0140 |  |  |  |  | 123d | 0d |  |  | EBWK 6 Day Egypt Holidays |  | 2006-07-29 | 110 | 0 | 0 | 02M | S0110 | 1 | 02 | CO | 1S1 | 02M | S0 | S | C | C |  |  |  |  | B1040 |  |  |  |
| CO02CS0120 |  | 02C Erect Misc. Steel (Platforms) |  | 80d | 2007-05-31 | 2007-09-01 | PO02CS0010 FS+30d, EM02CCV122 FS+30d |  |  |  |  | 83d | 0d |  |  | EBWK 6 Day Egypt Holidays |  | 2006-07-29 | 120 | 0 | 0 | 02C | S0120 | 26 | 02 | CO | 1S2 | 02C | S0 | S | C | C |  |  |  |  | B1040 |  |  |  |
| CO02GS0130 |  | 02G Erect Misc. Steel (Platforms) |  | 80d | 2007-05-31 | 2007-09-01 | PO02GS0010 FS+30d, CO02GC0150, CO02GM0130 SS+18d |  |  |  |  | 107d | 0d |  |  | EBWK 6 Day Egypt Holidays |  | 2006-07-29 | 120 | 12.5 | 0 | 02G | S0120 | -36 | 02 | CO | 1S2 | 02G | S0 | S | C | C |  | 115 | 120 | 125 | B1040 |  |  |  |
| CO02KS0130 |  | 02K Pre-Install Misc Steel - Static Equipment |  | 12d | 2007-06-02 | 2007-06-16 | PK02KMC21Z, PK02KMC61Z, PK02KMD22Z, PK02KMD45Z, PK02KMD45A |  |  |  |  | 101d | 0d |  |  | EBWK 6 Day Egypt Holidays |  | 2006-07-29 | 130 | 0 | 0 | 02K | S0130 | -98.99791666 | 02 | CO | 1S2 | 02K | S0 | S | C | C |  |  |  |  | B1040 |  |  |  |
| CO02DS0110 |  | 02D Erect Structural Steel |  | 18d | 2007-06-07 | 2007-06-27 | PO02DS0000 FS+30d, PO02DS0010 FF+36d, EM02DCV122 FS+30d |  |  |  |  | 93d | 0d |  |  | EBWK 6 Day Egypt Holidays |  | 2006-07-29 | 110 | 0 | 0 | 02D | S0110 | 0 | 02 | CO | 1S1 | 02D | S0 | S | C | C |  |  |  |  | B1040 |  |  |  |
| CO02LS0120 |  | 02L Erect Misc Steel |  | 24d | 2007-06-07 | 2007-07-04 | CO02LS0110 SS+24d, PO02LS0010 |  |  |  |  | 39d | 0d |  |  | EBWK 6 Day Egypt Holidays |  | 2006-07-29 | 120 | 0 | 0 |  |  | 10 | 02 | CO | 1S2 | 02L | S0 | S | C | C |  |  |  |  | B1040 |  |  |  |
| CO02MS0130 |  | 02M Pre-Install Misc Steel - 105-D |  | 12d | 2007-06-09 | 2007-06-23 | PK02MMD33Z |  |  |  |  | 63d | 7d |  |  | EBWK 6 Day Egypt Holidays |  | 2006-07-29 | 130 | 0 | 0 | 02M | S0130 | -18 | 02 | CO | 1S2 | 02M | S0 | S | C | C |  |  |  |  | B1040 |  | 105D |  |
| CO02AS0110 |  | 02A Erect Structural Steel |  | 18d | 2007-06-14 | 2007-07-04 | PO02AS0000 FS+30d, PO02AS0010 FF+36d, EM02ACV122 FS+30d |  |  |  |  | 103d | 0d |  |  | EBWK 6 Day Egypt Holidays |  | 2006-07-29 | 110 | 0 | 0 | 02A | S0110 | 0 | 02 | CO | 1S1 | 02A | S0 | S | C | C |  |  |  |  | B1040 |  |  |  |
| CO02ES0110 |  | 02E Erect Structural Steel |  | 18d | 2007-06-21 | 2007-07-11 | PO02ES0000 FS+30d, CO02EC0140 |  |  |  |  | 127d | 0d |  |  | EBWK 6 Day Egypt Holidays |  | 2006-07-29 | 120 | 0 | 0 | 02E | S0120 | 24 | 02 | CO | 1S1 | 02E | S0 | S | C | C |  |  |  |  | B1040 |  |  |  |
| CO02ES0120 |  | 02E Erect Misc Steel |  | 18d | 2007-06-21 | 2007-07-11 | PO02ES0010 FS+30d |  |  |  |  | 67d | 0d |  |  | EBWK 6 Day Egypt Holidays |  | 2006-07-29 | 120 | 0 | 0 | 02E | S0120 | 0 | 02 | CO | 1S2 | 02E | S0 | S | C | C |  |  |  |  | B1040 |  |  |  |
| CO02FS0120 |  | 02F Erect Misc Steel |  | 18d | 2007-06-21 | 2007-07-11 | PO02FS0010 FS+30d |  |  |  |  | 133d | 0d |  |  | EBWK 6 Day Egypt Holidays |  | 2006-07-29 | 120 | 0 | 0 | 02F | S0120 | 21 | 02 | CO | 1S2 | 02F | S0 | S | C | C |  |  |  |  | B1040 |  |  |  |
| CO02JS0110 |  | 02J Erect Structural Steel - Structure |  | 12d | 2007-06-21 | 2007-07-04 | PO02JS0000 FS+30d |  |  |  |  | 98d | 0d |  |  | EBWK 6 Day Egypt Holidays |  | 2006-07-29 | 110 | 0 | 0 | 02J | S0110 | 18 | 02 | CO | 1S1 | 02J | S0 | S | C | C |  |  |  |  | B1040 |  |  |  |
| CO02MS0120 |  | 02M Erect Misc Steel - Structure |  | 18d | 2007-06-21 | 2007-07-11 | CO02MS0110 SS+24d, PO02MS0010 FS+30d |  |  |  |  | 123d | 0d |  |  | EBWK 6 Day Egypt Holidays |  | 2006-07-29 | 120 | 0 | 0 | 02M | S0120 | 1 | 02 | CO | 1S2 | 02M | S0 | S | C | C |  |  |  |  | B1040 |  |  |  |
| CO02DS0120 |  | 02D Erect Misc Steel |  | 18d | 2007-06-28 | 2007-07-18 | CO02DS0110 |  |  |  |  | 93d | 0d |  |  | EBWK 6 Day Egypt Holidays |  | 2006-07-29 | 120 | 0 | 0 | 02D | S0120 | 0 | 02 | CO | 1S2 | 02D | S0 | S | C | C |  |  |  |  | B1040 |  |  |  |
| CO02JS0120 |  | 02J Erect Misc Steel - Structure |  | 6d | 2007-07-05 | 2007-07-11 | CO02JS0110, PO02JS0010 FS+30d |  |  |  |  | 98d | 0d |  |  | EBWK 6 Day Egypt Holidays |  | 2006-07-29 | 120 | 0 | 0 | 02J | S0120 | 18 | 02 | CO | 1S2 | 02J | S0 | S | C | C |  |  |  |  | B1040 |  |  |  |
| CO02KS0120 |  | 02K Erect Misc Steel |  | 18d | 2007-07-07 | 2007-07-28 | CO02KM0110, PO02KS0010 FS+30d |  |  |  |  | 101d | 0d |  |  | EBWK 6 Day Egypt Holidays |  | 2006-07-29 | 120 | 0 | 0 | 02K | S0120 | 26 | 02 | CO | 1S2 | 02K | S0 | S | C | C |  |  |  |  | B1040 |  |  |  |
| CO02AS0120 |  | 02A Erect Misc Steel |  | 18d | 2007-07-12 | 2007-08-01 | CO02AS0110 SS+24d |  |  |  |  | 103d | 0d |  |  | EBWK 6 Day Egypt Holidays |  | 2006-07-29 | 120 | 0 | 0 | 02A | S0120 | 0 | 02 | CO | 1S2 | 02A | S0 | S | C | C |  |  |  |  | B1040 |  |  |  |
| CO02NS0120 |  | 02N Erect Misc Steel |  | 30d | 2007-07-18 | 2007-08-21 | CO02NM0110, PO02NMS110 FS+30d |  |  |  |  | 56d | 0d |  |  | EBWK 6 Day Egypt Holidays |  | 2006-07-29 | 120 | 0 | 0 | 02N | S0120 | -4 | 02 | CO | 1S2 | 02N | S0 | S | C | C |  |  |  |  | B1040 |  |  |  |
| CO02QS0120 |  | 02Q Erect Misc Steel |  | 18d | 2007-07-22 | 2007-08-11 | CO02QM0110, PO02QMS110 FS+30d |  |  |  |  | 101d | 0d |  |  | EBWK 6 Day Egypt Holidays |  | 2006-07-29 | 120 | 0 | 0 | 02Q | S0120 | 12 | 02 | CO | 1S2 | 02Q | S0 | S | C | C |  |  |  |  | B1040 |  |  |  |
| CO02PS0120 |  | 02P Erect Misc Steel |  | 24d | 2007-07-29 | 2007-08-25 | CO02PM0110 |  |  |  |  | 103d | 0d |  |  | EBWK 6 Day Egypt Holidays |  | 2006-07-29 | 120 | 0 | 0 | 02P | S0120 | 12 | 02 | CO | 1S2 | 02P | S0 | S | C | C |  |  |  |  | B1040 |  |  |  |
| CO02HS0110 |  | 02H Erect Structural Steel - Structure |  | 36d | 2007-09-04 | 2007-11-06 | PO02HS0000 FS+30d, PO02HS0010 FF+36d, EM02HCV122 FS+30d, CO02HM0120 |  |  |  |  | 10d | 0d |  |  | EBWK 6 Day Egypt Holidays |  | 2006-07-29 | 110 | 0 | 0 | 02H | S0110 | 12 | 02 | CO | 1S1 | 02H | S0 | S | C | C |  |  |  |  | B1040 |  |  | 25 |

Notes:
- CO02EU3110: P3 Activity Log Info: Need to tie to material / deliveries
- CO02GU3110: P3 Activity Log Info: Need to tie to material / deliveries
- CO02HU3110: P3 Activity Log Info: Need to tie to material / deliveries
- CO02JU3110: P3 Activity Log Info: Need to tie to material / deliveries
- CO02LU3110: P3 Activity Log Info: Need to tie to material / deliveries
- CO02MU3110: P3 Activity Log Info: Need to tie to material / deliveries
- CO02YU3110: P3 Activity Log Info: Need to tie to material / deliveries
- CO02CU3110: P3 Activity Log Info: Need to tie to material / deliveries
- CO02AU3110: P3 Activity Log Info: Need to tie to material / deliveries
- CO02KU3110: P3 Activity Log Info: Need to tie to material / deliveries
- CO02FU3110: P3 Activity Log Info: Need to tie to material / deliveries
- CO02DU3110: P3 Activity Log Info: Need to tie to material / deliveries
- CO02BU3110: P3 Activity Log Info: Need to tie to material / deliveries

| ID | WBS | Activity | Type | Duration | Start | Finish | Predecessors | Complete | Remaining | Planned start | Planned finish | Total float | Free float | Constraint | Calendar | Resources | zData Date | Sequence | PCA Criticality Index | PCA Duration Sensitivity | User Defined Field 1 | User Definer Field 2 | user_number1 | EB02 - UNIT | EB01 - RESP | EB06 - WORK OP | EB03 - AREA | EB05 - DISCIPLINE | EB04 - CLASS | EB00 - EPC | EB11 - FLAG | Optimistic Duration | Most Likely Duration | Pessimistic Duration | EB08 - TAG | user_integer2 | EB14 - RISK | EB10 - KEY | EB22 - Critical Actvities |
| --- | --- | --- | --- | --- | --- | --- | --- | --- | --- | --- | --- | --- | --- | --- | --- | --- | --- | --- | --- | --- | --- | --- | --- | --- | --- | --- | --- | --- | --- | --- | --- | --- | --- | --- | --- | --- | --- | --- | --- |
|  | M0 | **Mechanical Equipment** |  |  | 2006-09-20 | 2007-09-15 |  |  |  |  |  |  |  |  |  |  |  |  |  |  |  |  |  |  |  |  |  |  |  |  |  |  |  |  |  |  |  |  |  |
| CO02MM0110 |  | 02M Set Static Equipment - Gen'l |  | 28d | 2006-09-20 A | 2007-07-16 | CO02MC0110, PK02MMC21Z, PK02MMC32Z, PK02MMD42Z, PK02MMB81Z, CO02MS0110, PK000MD112 FF+20d |  | 28d | 2007-04-26 | 2007-05-28 | 147d | 11d |  | EBWK 6 Day Egypt Holidays |  | 2006-07-29 | 110 | 0 | 0 | 02M | M0110 | 1 | 02 | CO | 1M1 | 02M | M0 | M | C |  |  |  |  |  |  |  |  |  |
| WO020M0100 |  | 020 Major Equipment | WBS summary | 198d | 2006-09-20 A | 2007-09-15 | EK000YA000 |  | 198d | 2007-01-27 | 2007-09-15 | 156d | 472d |  | EBWK 6 Day Egypt Holidays | Major Equipment - Construction [333517 h] | 2006-07-29 | M00 | 0 | 0 | 02A | M0M00 |  | 02 | CO | 1M1 | 020 | M0 | M | C | WC |  |  |  |  |  |  |  |  |
| CO02EM0110 |  | 02E Set Static Equipment |  | 24d | 2006-10-11 A | 2007-08-08 | CO02EC0110, PK02EMC21Z, PK02EMC23Z, PK02EMD34Z, PK02EMD42Z, PK02EMD45Z, CO02ES0110, PK02EMC23S FF, PK02LMC23S FF |  | 24d | 2007-04-28 | 2007-05-24 | 127d | 0d |  | EBWK 6 Day Egypt Holidays |  | 2006-07-29 | 110 | 0 | 0 | 02E | M0110 | 24 | 02 | CO | 1M1 | 02E | M0 | M | C |  |  |  |  |  |  |  |  |  |
| CO02LM0110 |  | 02L Set Static Equipment - Gen'l |  | 28d | 2006-10-14 A | 2007-08-20 | CO02LC0110, CO02LM0120 SS, PK02LMD42Z, PK02LMD47Z, PK02LML42Z, PK02LMU31Z |  | 28d | 2007-06-30 | 2007-07-31 | 103d | 8d |  | EBWK 6 Day Egypt Holidays |  | 2006-07-29 | 110 | 0 | 0 |  |  | 10 | 02 | CO | 1M1 | 02L | M0 | M | C |  |  |  |  |  |  |  |  |  |
| CO02HM0140 |  | 02H Set - 156-F Steam Blowdown Drum |  | 3d | 2006-10-19 A | 2006-10-19 A | CO02HC0160 | 100% |  | 2007-06-23 | 2007-06-25 |  |  |  | EBWK 6 Day Egypt Holidays |  | 2006-07-29 | 140 | 0 | 3.4 | CK02H | M0140 | 13 | 02 | CO | 1M1 | 02H | M0 | M | C |  | 2 | 3 | 4 | 156F |  |  |  |  |
| CO02AM0110 |  | 02A Set Static Equipment |  | 12d | 2006-11-01 A | 2007-07-18 | CO02AC0110, PK02AMC21Z, PK02AMC61Z, PK02AMD22Z, CO02AS0110, PK02AMD22D |  | 12d | 2007-05-07 | 2007-05-20 | 144d | 0d |  | EBWK 6 Day Egypt Holidays |  | 2006-07-29 | 110 | 0 | 0 | 02A | M0110 | 0 | 02 | CO | 1M1 | 02A | M0 | M | C |  |  |  |  |  |  |  |  |  |
| CO02CM0140 |  | 02C Set - 103-JTC Surface Condenser |  | 3d | 2006-11-01 A | 2006-11-02 A | CO02CC0160, PK02CMJ75Z | 100% |  | 2007-04-11 | 2007-04-14 |  |  |  | EBWK 6 Day Egypt Holidays |  | 2006-07-29 | 140 | 0 | 0 | 02C | M0140 | 0 | 02 | CO | 1M1 | 02C | M0 | M | C |  |  |  |  | 103JTC |  |  |  |  |
| CO02DM0110 |  | 02D Set Static Equipment |  | 12d | 2006-11-01 A | 2007-07-11 | CO02DC0110, PK02DMC21Z, PK02DMD43Z, PK02DMD44Z, CO02DS0110, PK000MD44Q |  | 12d | 2007-04-28 | 2007-05-10 | 133d | 0d |  | EBWK 6 Day Egypt Holidays |  | 2006-07-29 | 110 | 0 | 0 | 02D | M0110 | 0 | 02 | CO | 1M1 | 02D | M0 | M | C |  |  |  |  |  |  |  |  |  |
| CO02KM0110 |  | 02K Set Static Equipment - Gen'l |  | 18d | 2006-12-07 A | 2007-07-07 | CO02KC0110, PK02KMD22Z, PK02KMD45Z, PK02KMC21Z, PK02KMC61Z, PK02KML42Z, PK02KML43Z, CO02KS0130, PK02KMD45A |  | 18d | 2007-06-09 | 2007-06-30 | 101d | 0d |  | EBWK 6 Day Egypt Holidays |  | 2006-07-29 | 110 | 0 | 0 | 02K | M0110 | -37 | 02 | CO | 1M1 | 02K | M0 | M | C |  |  |  |  |  |  |  |  |  |
| CO02JM0110 |  | 02J Set Static Equipment - Gen'l |  | 10d | 2006-12-09 A | 2007-07-11 | CO02JC0110, PK02JMC21Z, PK02JMC32Z, PK02JMD32Z, PK02JMD34Z, CO02JS0120 FF |  | 10d | 2007-04-15 | 2007-04-25 | 98d | 0d |  | EBWK 6 Day Egypt Holidays |  | 2006-07-29 | 110 | 0 | 0 | 02J | M0110 | 18 | 02 | CO | 1M1 | 02J | M0 | M | C |  |  |  |  |  |  |  |  |  |
| CO02CM0110 |  | 02C Set Static Equipment - 128/167-C |  | 28d | 2006-12-10 A | 2006-12-10 A | CO02CC0110 SS, PK02CMC21Z | 100% |  | 2007-04-17 | 2007-05-19 |  |  |  | EBWK 6 Day Egypt Holidays |  | 2006-07-29 | 110 | 0 | 0 | 02C | M0110 | 0 | 02 | CO | 1M1 | 02C | M0 | M | C |  |  |  |  |  |  |  |  |  |
| CO02BM0110 |  | 02B Set Static Equipment |  | 12d | 2006-12-28 A | 2006-12-28 A | CO02BC0110, PK02BML31Z | 100% |  | 2007-04-05 | 2007-04-18 |  |  |  | EBWK 6 Day Egypt Holidays |  | 2006-07-29 | 110 | 0 | 0 | 02B | M0110 | -12 | 02 | CO | 1M1 | 02B | M0 | M | C |  |  |  |  |  |  |  |  |  |
| CO02GM0140 |  | 02G Set/Install - 102-J Fd Gas Compr. & Aux. |  | 100d | 2007-01-27 | 2007-05-22 | CO02GC0160, PK02GMJ21Z |  |  |  |  | 188d | 63d |  | EBWK 6 Day Egypt Holidays |  | 2006-07-29 | 140 | 0 | 0 | 02G | M0140 | 15 | 02 | CO | 1M1 | 02G | M0 | M | C |  |  |  |  | 102J |  |  |  |  |
| CO02HM0200 |  | 02H Start Primary Reformer Erection (101-B) | milestone | 0d | 2007-02-01 | 2007-02-01 | PK02HMBP1K, CO02HC0110 |  |  |  |  | 108d | 0d | start on or after 2007-02-01 | EBWK 6 Day Egypt Holidays |  | 2006-07-29 |  | 0 | 0 |  |  | 0 | 02 | CO | 1M1 | 02H | M0 | M | C | C |  |  |  | 101B |  |  |  |  |
| CO02HM0210 |  | 02H Erect Radiant Section Shell (101-B) |  | 78d | 2007-02-01 | 2007-05-02 | CO02HM0200 SS, PK02HMBP1K |  |  |  |  | 108d | 0d |  | EBWK 6 Day Egypt Holidays |  | 2006-07-29 |  | 0 | 0 |  |  | 0 | 02 | CO | 1M1 | 02H | M0 | M | C | C |  |  |  | 101B | 78 | 04 |  |  |
| CO02CM0125 |  | 02C Set - 103/105-J Compressors |  | 5d | 2007-02-11 | 2007-02-15 | CO02CC0150, PK02CMJ21Z |  |  |  |  | 167d | 0d | finish on or after 2007-02-15 | EBWK 6 Day Egypt Holidays |  | 2006-07-29 | 130 | 0 | 0 | 02C | M0130 | 0 | 02 | CO | 1M1 | 02C | M0 | M | C |  |  |  |  |  |  |  |  |  |
| CO02CM0130 |  | 02C Install - 103/105-J Compressors & Aux. Equip. |  | 100d | 2007-02-17 | 2007-06-12 | CO02CM0125 |  |  |  |  | 167d | 0d |  | EBWK 6 Day Egypt Holidays |  | 2006-07-29 | 130 | 0 | 0 | 02C | M0130 | 0 | 02 | CO | 1M1 | 02C | M0 | M | C |  |  |  |  |  |  |  |  |  |
| CO02FM0110 |  | 02F Set Static Equipment |  | 24d | 2007-03-01 | 2007-03-28 | CO02FC0110 |  |  |  |  | 241d | 77d |  | EBWK 6 Day Egypt Holidays |  | 2006-07-29 | 110 | 0 | 0 | 02F | M0110 | -30 | 02 | CO | 1M1 | 02F | M0 | M | C |  |  |  |  |  |  |  |  |  |
| CO02HM0220 |  | 02H Erect Radiant Ducting / Burners (101-B) |  | 24d | 2007-03-24 | 2007-04-19 | CO02HM0210 SS+43d, PK02HMB61Z, PK02HMBP1S |  |  |  |  | 151d | 0d |  | EBWK 6 Day Egypt Holidays |  | 2006-07-29 |  | 0 | 0 |  |  | 0 | 02 | CO | 1M1 | 02H | M0 | M | C | C |  |  |  | 101B | 24 | 04 |  |  |
| CO02GM0110 |  | 02G Set Static Equipment - Gen'l |  | 28d | 2007-03-29 | 2007-04-30 | CO02GC0110, PK02GMC21Z, PK02GMJ75Z, PK02GMU26Z FF |  |  |  |  | 208d | 103d |  | EBWK 6 Day Egypt Holidays |  | 2006-07-29 | 110 | 0 | 0 | 02G | M0110 | 25 | 02 | CO | 1M1 | 02G | M0 | M | C | PS |  |  |  |  |  |  |  |  |
| CO02GM0125 |  | 02G Set - 101-J/JT Air Compr. |  | 24d | 2007-04-07 | 2007-05-05 | CO02GC0150, PK02GMJ22Z |  |  |  |  | 105d | 0d |  | EBWK 6 Day Egypt Holidays |  | 2006-07-29 | 130 | 0 | 0 | 02G | M0130 | -0.00208333 | 02 | CO | 1M1 | 02G | M0 | M | C | PS |  |  |  | 101J |  |  |  |  |
| CO02AM0150 |  | 02A Set Rotating Equipment |  | 24d | 2007-04-09 | 2007-05-06 | PK02AMJ37Z, CO02AC0110 |  |  |  |  | 207d | 0d |  | EBWK 6 Day Egypt Holidays |  | 2006-07-29 | 150 | 0 | 0 | 02A | M0150 | 0 | 02 | CO | 1M1 | 02A | M0 | M | C |  |  |  |  |  |  |  |  |  |
| CO02HM0250 |  | 02H Set Forced Draft Fan (101-B) |  | 24d | 2007-04-14 | 2007-05-12 | PK02HMB62Z FS+6d, CO02HC0110 |  |  |  |  | 234d | 0d |  | EBWK 6 Day Egypt Holidays |  | 2006-07-29 |  | 0 | 0 |  |  | 0 | 02 | CO | 1M1 | 02H | M0 | M | C | C |  |  |  | 101B |  |  |  |  |
| CO02HM0246 |  | 02H Install Radiant Sect Coils (101-B) |  | 24d | 2007-04-21 | 2007-05-17 | CO02HM0220, PK02HMBP1Q |  |  |  |  | 151d | 0d |  | EBWK 6 Day Egypt Holidays |  | 2006-07-29 |  | 0 | 0 |  |  | 0 | 02 | CO | 1M1 | 02H | M0 | M | C | C |  |  |  | 101B | 24 | 04 |  |  |
| CO02HM0255 |  | 02H Set Induced Draft Fan (101-B) |  | 24d | 2007-04-21 | 2007-05-19 | PK02HMB62Z FS+6d, CO02HC0110, CO02HM0250 SS+6d |  |  |  |  | 234d | 11d |  | EBWK 6 Day Egypt Holidays |  | 2006-07-29 |  | 0 | 0 |  |  | 0 | 02 | CO | 1M1 | 02H | M0 | M | C | C |  |  |  | 101B |  |  |  |  |
| CO02CM0150 |  | 02C Set Rotating Equipment - 112-J/JA/JM |  | 4d | 2007-04-25 | 2007-04-29 | PK02CMJ35Z, PK05AMJ37A, PK000MJ38A, CO02CC0110 |  |  |  |  | 205d | 60d |  | EBWK 6 Day Egypt Holidays |  | 2006-07-29 | 150 | 0 | 0 | 02C | M0150 | 0 | 02 | CO | 1M1 | 02C | M0 | M | C |  |  |  |  | 112J |  |  |  |  |
| CO02GM0150 |  | 02G Set Rotating Equipment |  | 14d | 2007-04-25 | 2007-05-10 | PK02GMJ35Z, CO02GC0110 |  |  |  |  | 199d | 94d |  | EBWK 6 Day Egypt Holidays |  | 2006-07-29 | 150 | 0 | 0 | 02G | M0150 | 25 | 02 | CO | 1M1 | 02G | M0 | M | C |  |  |  |  |  |  |  |  |  |
| CO02KM0150 |  | 02K Set Rotating Equipment |  | 6d | 2007-04-25 | 2007-05-01 | PK02KMJ35Z, CO02KC0110 |  |  |  |  | 163d | 0d |  | EBWK 6 Day Egypt Holidays |  | 2006-07-29 | 150 | 0.2 | 0 | 02K | M0150 | -37 | 02 | CO | 1M1 | 02K | M0 | M | C |  |  |  |  |  |  |  |  |  |
| CO02LM0150 |  | 02L Set Rotating Equipment |  | 28d | 2007-04-25 | 2007-05-27 | PK02LMJ32Z, PK02LMJ35Z, PK01BMJ35Z, PK03CMJ35Z, PK03DMJ35Z, PK05AMJ35Z, CO02LC0110 |  |  |  |  | 170d | 81d |  | EBWK 6 Day Egypt Holidays |  | 2006-07-29 | 150 | 0.3 | 0 |  |  | 10 | 02 | CO | 1M1 | 02L | M0 | M | C |  |  |  |  |  |  |  |  |  |
| CO02DM0150 |  | 02D Set Rotating Equipment |  | 12d | 2007-05-02 | 2007-05-15 | PK02DMJ35Z FS+6d, CO02DC0110 |  |  |  |  | 182d | 0d |  | EBWK 6 Day Egypt Holidays |  | 2006-07-29 | 150 | 0 | 0 | 02D | M0150 | -3 | 02 | CO | 1M1 | 02D | M0 | M | C |  |  |  |  |  |  |  |  |  |
| CO02HM0230 |  | 02H Set Convection Sections (101-B) |  | 24d | 2007-05-03 | 2007-05-30 | PK02HMBP1R FF, CO02HC0110, CO02HM0210 |  |  |  |  | 108d | 0d |  | EBWK 6 Day Egypt Holidays |  | 2006-07-29 |  | 0 | 0 |  |  | 0 | 02 | CO | 1M1 | 02H | M0 | M | C | C |  |  |  | 101B |  |  |  |  |
| CO02HM0240 |  | 02H Set Stack for (101-B) |  | 24d | 2007-05-03 | 2007-05-30 | CO02HM0210 |  |  |  |  | 223d | 0d |  | EBWK 6 Day Egypt Holidays |  | 2006-07-29 |  | 0 | 0 |  |  | 0 | 02 | CO | 1M1 | 02H | M0 | M | C | C |  |  |  | 101B |  |  |  |  |
| CO02GM0130 |  | 02G Install - 101-J/JT Air Compr. & Gen. Turb. & Aux. |  | 100d | 2007-05-05 | 2007-08-29 | CO02GM0125 |  |  |  |  | 105d | 0d |  | EBWK 6 Day Egypt Holidays |  | 2006-07-29 | 130 | 0 | 0 | 02G | M0130 | -0.00208333 | 02 | CO | 1M1 | 02G | M0 | M | C |  |  |  |  | 101J |  |  |  |  |
| CO02FM0150 |  | 02F Set Rotating Equipment |  | 24d | 2007-05-16 | 2007-06-12 | PK02LMJ32Z, PK02LMJ35Z, PK02FMJ34Z, PK02FMJ31Z, PK01BMJ35Z, PK03CMJ35Z, PK03DMJ35Z, PK05AMJ35Z, CO02FC0110 |  |  |  |  | 176d | 0d |  | EBWK 6 Day Egypt Holidays |  | 2006-07-29 | 150 | 0 | 0 | 02F | M0150 | -30 | 02 | CO | 1M1 | 02F | M0 | M | C |  |  |  |  |  |  |  |  |  |
| CO020M0110 |  | Mobilize / Assemble / Test Heavy Lift Crane |  | 12d | 2007-05-19 | 2007-05-31 | PK000MD31O SS, PK000MJ21O SS, PK000MJ22O SS, PK000MD32O SS, PK000MD21O SS, PK000MD33O SS, PK000MC32O SS, PK000MD211 SS |  |  |  |  | 56d | 0d | start on or after 2007-05-19 | EBWK 6 Day Egypt Holidays |  | 2006-07-29 | 130 | 0 | 0 | 02J | M0130 | 0 | 02 | CO | 1M1 | 020 | M0 | M | C |  | 10 | 12 | 14 |  |  |  | HL |  |
| CO02HM0248 |  | 02H Install Effluent Transfer Line (107-D) |  | 12d | 2007-05-19 | 2007-05-31 | CO02HM0246, PK000MB33Z, PK02HMD51Z |  |  |  |  | 151d | 0d |  | EBWK 6 Day Egypt Holidays |  | 2006-07-29 |  | 0 | 0 |  |  | 0 | 02 | CO | 1M1 | 02H | M0 | M | C | C |  |  |  | 107D |  |  |  |  |
| CO02HM0235 |  | 02H Erect Preheater (101-B) |  | 48d | 2007-05-31 | 2007-07-25 | PK02HMB63Z, CO02HM0230 |  |  |  |  | 175d | 0d |  | EBWK 6 Day Egypt Holidays |  | 2006-07-29 |  | 0 | 0 |  |  | 0 | 02 | CO | 1M1 | 02H | M0 | M | C | C |  |  |  | 101B |  |  |  |  |
| CO020M0120 |  | Heavy Lift Crane Useage | level of effort | 45d | 2007-06-02 | 2007-09-03 | CO020M0110 |  |  | 2007-06-02 | 2007-07-23 | 56d | 0d |  | EBWK 6 Day Egypt Holidays |  | 2006-07-29 | 130 | 0 | 0 | 02J | M0130 |  | 02 | CO | 1M1 | 020 | M0 | M | C |  |  |  |  |  |  |  | HL |  |
| CO02HM0130 |  | 02H Set (Heavy Lift) - 103-D (Secondary Reformer) |  | 5d | 2007-06-02 | 2007-06-06 | CO02HC0150, CO02HS0130, CO020M0110 |  |  |  |  | 56d | 0d |  | EBWK 6 Day Egypt Holidays |  | 2006-07-29 | 130 | 0 | 3.6 | CK02H | M0130 | 0 | 02 | CO | 1M1 | 02H | M0 | M | C |  | 3 | 5 | 6 | 103D |  |  | HL |  |
| CO02HM0225 |  | 02H Erect Penthouse Roof, & Siding (101-B) |  | 24d | 2007-06-02 | 2007-06-28 | CO02HM0248, PK02HMB21Z FS+30d, PK02HMB65Z |  |  |  |  | 151d | 0d |  | EBWK 6 Day Egypt Holidays |  | 2006-07-29 |  | 0 | 0 |  |  | 0 | 02 | CO | 1M1 | 02H | M0 | M | C | C |  |  |  | 101B |  |  |  |  |
| CO02JM0130 |  | 02J Set (Heavy Lift) - 104-D2 (Low Temp Shift Converter) |  | 5d | 2007-06-07 | 2007-06-12 | CO02JC0150, CO02JS0130, CO02HM0130 |  |  |  |  | 56d | 0d |  | EBWK 6 Day Egypt Holidays |  | 2006-07-29 | 130 | 0 | 0 | 02J | M0130 | 0 | 02 | CO | 1M1 | 02J | M0 | M | C |  |  |  |  | 104D2 |  |  | HL |  |
| CO02JM0140 |  | 02J Set (Heavy Lift) - 104-D1 (High Temp Shift Converter) |  | 5d | 2007-06-13 | 2007-06-18 | CO02JC0160, CO02JS0140, CO02JM0130 |  |  |  |  | 56d | 0d |  | EBWK 6 Day Egypt Holidays |  | 2006-07-29 | 140 | 0 | 0 | 02J | M0140 | 0 | 02 | CO | 1M1 | 02J | M0 | M | C |  |  |  |  | 104D1 |  |  | HL |  |
| CO02LM0130 |  | 02L Set (Heavy Lift) - 101-E (CO2 Absorber) |  | 5d | 2007-06-19 | 2007-06-24 | CO02LC0150, CO02LS0130, CO02JM0140 |  |  |  |  | 56d | 0d |  | EBWK 6 Day Egypt Holidays |  | 2006-07-29 | 130 | 0 | 0 |  |  | 0 | 02 | CO | 1M1 | 02L | M0 | M | C |  |  |  |  | 101E |  |  | HL |  |
| CO02LM0140 |  | 02L Set (Heavy Lift) - 102-E (CO2 Stripper) |  | 5d | 2007-06-25 | 2007-06-30 | CO02LC0160, CO02LS0140, CO02JM0140, CO02LM0130 |  |  |  |  | 56d | 0d |  | EBWK 6 Day Egypt Holidays |  | 2006-07-29 | 140 | 0 | 0 |  |  | -4 | 02 | CO | 1M1 | 02L | M0 | M | C |  |  |  |  | 102E |  |  | HL |  |
| CO02HM0260 |  | 02H Compete Installation of Ducts (101-B) |  | 48d | 2007-06-28 | 2007-08-22 | CO02HM0230 FF+24d, CO02HM0235 FF+24d, CO02HM0240 FF+24d, CO02HM0250 FF+24d, CO02HM0255 FF+24d, PK02HMB69Z FS+24d, PK02HMBP1S |  |  |  |  | 175d | 1d |  | EBWK 6 Day Egypt Holidays |  | 2006-07-29 |  | 0 | 0 |  |  | 0 | 02 | CO | 1M1 | 02H | M0 | M | C | C |  |  |  | 101B |  |  |  |  |
| CO02HM0215 |  | 02H Erect Fuel Gas Lines (101-B) |  | 24d | 2007-06-30 | 2007-07-26 | CO02HM0225, PK02HMBP1T |  |  |  |  | 151d | 24d |  | EBWK 6 Day Egypt Holidays |  | 2006-07-29 |  | 0 | 0 |  |  | 0 | 02 | CO | 1M1 | 02H | M0 | M | C | C |  |  |  | 101B |  |  |  |  |
| CO02HM0227 |  | 02H Install Spring Hangers & Align (101-B) |  | 36d | 2007-06-30 | 2007-08-09 | CO02HM0225, PK02HMB64Z, PK000MB71Z |  |  |  |  | 186d | 12d |  | EBWK 6 Day Egypt Holidays |  | 2006-07-29 |  | 0 | 0 |  |  | 0 | 02 | CO | 1M1 | 02H | M0 | M | C | C |  |  |  | 101B |  |  |  |  |
| CO02MM0130 |  | 02M Set (Heavy Lift) - 105-D (Ammonia Converter) |  | 5d | 2007-07-01 | 2007-07-05 | CO02MC0150, CO02MS0130, CO02LM0140 |  |  |  |  | 56d | 0d |  | EBWK 6 Day Egypt Holidays |  | 2006-07-29 | 130 | 0 | 0 | 02M | M0130 | -4 | 02 | CO | 1M1 | 02M | M0 | M | C |  |  |  |  | 105D |  |  | HL |  |
| CO02MM0140 |  | 02M Set (Heavy Lift) - 121-C (Ammonia Conv./ Effl Exch.) |  | 5d | 2007-07-07 | 2007-07-11 | CO02MC0150, PK02NMC32Z, CO02MM0130, PK020MC31I |  |  |  |  | 56d | 0d |  | EBWK 6 Day Egypt Holidays |  | 2006-07-29 | 130 | 0 | 0 | 02M | M0130 | -4 | 02 | CO | 1M1 | 02M | M0 | M | C |  |  |  |  | 121C |  |  | HL |  |
| CO02NM0110 |  | 02N Set (Heavy Lift) - 120-C (Ammonia Unitized Chiller) |  | 5d | 2007-07-12 | 2007-07-17 | CO02NC0110, PK02NMC32Z, CO02MM0140, PK020MC31I |  |  |  |  | 56d | 0d |  | EBWK 6 Day Egypt Holidays |  | 2006-07-29 | 110 | 0 | 0 | 02N | M0110 | -4 | 02 | CO | 1M1 | 02N | M0 | M | C |  |  |  |  | 120C |  |  | HL |  |
| CO02PM0110 |  | 02P Set 101-U Dearator |  | 12d | 2007-07-15 | 2007-07-28 | PK02PMU35Z, CO02YS0110 |  |  |  |  | 103d | 0d |  | EBWK 6 Day Egypt Holidays |  | 2006-07-29 | 110 | 0 | 0 | 02P | M0110 | 12 | 02 | CO | 1M1 | 02P | M0 | M | C |  |  |  |  | 101U |  |  |  |  |
| CO02QM0110 |  | 02Q Set 101-F Steam Drum |  | 6d | 2007-07-15 | 2007-07-21 | PK02QMD41Z, CO02YS0110 |  |  |  |  | 101d | 0d |  | EBWK 6 Day Egypt Holidays |  | 2006-07-29 | 110 | 0 | 0 | 02Q | M0110 | 12 | 02 | CO | 1M1 | 02Q | M0 | M | C |  |  |  |  | 101F |  |  |  |  |
| CO02LM0120 |  | 02L Set Static Equipment - 02L Structure |  | 36d | 2007-07-19 | 2007-08-29 | CO02LC0140, PK02LMC21Z, PK02LMC23Z, PK02LMD44Z, CO02LS0110, PK02LMC23A, ZZ2120 |  |  |  |  | -15d | 0d |  | EBWK 6 Day Egypt Holidays |  | 2006-07-29 | 120 | 4.3 | 0 |  |  | 10 | 02 | CO | 1M1 | 02L | M0 | M | C |  | 30 | 36 | 40 |  |  |  |  |  |
| CO02HM0275 |  | 02H Complete Primary Reformer Erection (101-B) | milestone | 0d | 2007-08-23 | 2007-08-23 | CO02HM0215 FF, CO02HM0227 FF, CO02HM0245 FF, CO02HM0260 FF, PK02HMB42Z FF+48d, PK02HMB66Z FF+48d, PK02HMB68Z FF+48d |  |  |  |  | 174d | 0d |  | EBWK 6 Day Egypt Holidays |  | 2006-07-29 |  | 0 | 0 |  |  | 0 | 02 | CO | 1M1 | 02H | M0 | M | C | C |  |  |  | 101B |  |  |  |  |
| CO02HM0120 |  | 02H Set (Heavey Lift) - 101-C & 102-C |  | 5d | 2007-08-29 | 2007-09-03 | CO02HC0140, PK02HMC31Z |  |  |  |  | 10d | 0d |  | EBWK 6 Day Egypt Holidays |  | 2006-07-29 | 120 | 8.9 | 0.5 | CK02H | M0120 | -29 | 02 | CO | 1M1 | 02H | M0 | M | C |  | 4 | 5 | 7 |  |  |  | HL | C5 |
| CO020M0130 |  | Demobilize Heavy Lift Crane |  | 9d | 2007-09-04 | 2007-09-15 | CO020M0120, CO02HM0120 |  |  |  |  | 56d | 47d |  | EBWK 6 Day Egypt Holidays |  | 2006-07-29 | 130 | 0 | 0 | 02J | M0130 | -29 | 02 | CO | 1M1 | 020 | M0 | M | C |  | 6 | 9 | 10 |  |  |  | HL |  |

Notes:
- CO02LM0120: P3 Activity Log Info: 106C, 107C, 109C, 110C, 132F @ El 131 105C, / 111C @ El 160
- CO02HM0120: P3 Activity Log Info: 106C, 107C, 109C, 110C, 132F @ El 131 105C, / 111C @ El 160

| ID | WBS | Activity | Type | Duration | Start | Finish | Predecessors | Total float | Free float | Constraint | Calendar | Resources | zData Date | Optimistic Duration | Most Likely Duration | Pessimistic Duration | Sequence | PCA Criticality Index | PCA Duration Sensitivity | User Defined Field 1 | User Definer Field 2 | user_integer2 | user_number1 | EB02 - UNIT | EB01 - RESP | EB06 - WORK OP | EB03 - AREA | EB05 - DISCIPLINE | EB04 - CLASS | EB11 - FLAG | EB12 - TEMP | EB00 - EPC | EB14 - RISK | EB22 - Critical Actvities |
| --- | --- | --- | --- | --- | --- | --- | --- | --- | --- | --- | --- | --- | --- | --- | --- | --- | --- | --- | --- | --- | --- | --- | --- | --- | --- | --- | --- | --- | --- | --- | --- | --- | --- | --- |
|  | P0 | **A/G Piping** |  |  | 2007-05-13 | 2008-03-15 |  |  |  |  |  |  |  |  |  |  |  |  |  |  |  |  |  |  |  |  |  |  |  |  |  |  |  |  |
| CO02YP0130 |  | 02Y LB Pipe Erection |  | 132d | 2007-05-13 | 2007-11-04 | CK02YP0110, CO02YV1110 FF+10d, CO02YS0110 SS+78d, CO02YS0110 FF+78d, PK000PTA0K FF+80d, EM02YPI138 FS+30d, EM02YSY272 FS+30d | -35d | 0d |  | EBWK 6 Day Egypt Holidays |  | 2006-07-29 | 122 | 132 | 137 | 130 | 29.5 | 0 | 02Y | P0130 | 132 | 12 | 02 | CO | 1P2 | 02Y | P0 | P | C | 2Y | C | 21 | C3 |
| WO020P0100 |  | 020 Above Ground Pipe | WBS summary | 240d | 2007-05-13 | 2008-03-15 | EK000YA000 | -1d | 339d |  | EBWK 6 Day Egypt Holidays | Aboveground Pipe - Construction [766582 h] | 2006-07-29 |  |  |  | P00 | 0 | 0 | 02A | P0P00 |  |  | 02 | CO | P00 | 020 | P0 | P | WC |  | C |  |  |
| CO02GP0130 |  | 02G LB Pipe Erection |  | 99d | 2007-06-03 | 2007-10-10 | CO02GM0110 FF+24d, CO02GM0150 FF+24d, CO02GM0130 FF+24d, CO02GM0140 FF+24d, CK02GP0110, CO02GV1110 FF+10d, PK000PTA0K FS+30d, EM02GPI138 FS+30d, EM02GSY272 FS+30d, CO02GS0130 SS, CO02GS0130 FF | 105d | 0d |  | EBWK 6 Day Egypt Holidays |  | 2006-07-29 |  |  |  | 130 | 0 | 0 | 02G | P0130 | 99 | -11 | 02 | CO | 1P2 | 02G | P0 | P | C | L4 | C | 21 |  |
| CO02CP0130 |  | 02C LB Pipe Erection |  | 113d | 2007-06-07 | 2007-11-07 | CO02CM0110 FF+24d, CO02CM0150 FF+24d, CO02CM0130 FF+24d, CO02CM0140 FF+24d, CK02CP0110, CO02CV1110 FF+10d, PK000PTA0K FS+30d, PK000PTA0K FF, EM02CPI138 FS+30d, EM02CSY272 FF+30d, CO02CS0120 SS+6d, CO02CS0120 FF+6d | 83d | 0d |  | EBWK 6 Day Egypt Holidays |  | 2006-07-29 |  |  |  | 130 | 0 | 0 | 02C | P0130 | 113 | 0 | 02 | CO | 1P2 | 02C | P0 | P | C |  | C | 21 |  |
| CO02YP0140 |  | 02Y SB Pipe Erection |  | 132d | 2007-06-10 | 2007-12-02 | CO02YP0130 SS+24d, CO02YP0130 FF+24d, PK000PIA1P FF+72d | -29d | 0d |  | EBWK 6 Day Egypt Holidays |  | 2006-07-29 | 122 | 132 | 137 | 140 | 8.4 | 1.2 | 02Y | P0140 | 132 | 12 | 02 | CO | 1P3 | 02Y | P0 | P | C |  | C | 21 | C3 |
| CO02GP0140 |  | 02G SB Pipe Erection |  | 99d | 2007-06-10 | 2007-10-25 | CO02GP0130 SS+6d, CO02GP0130 FF+6d, PK000PIA1P FF+72d | 105d | 0d |  | EBWK 6 Day Egypt Holidays |  | 2006-07-29 |  |  |  | 140 | 0 | 0 | 02G | P0140 | 99 | -11 | 02 | CO | 1P3 | 02G | P0 | P | C |  | C | 21 |  |
| CO02CP0140 |  | 02C SB Pipe Erection |  | 113d | 2007-06-14 | 2007-11-14 | CO02CP0130 SS+6d, CO02CP0130 FF+6d, PK000PIA1P FF+72d | 83d | 0d |  | EBWK 6 Day Egypt Holidays |  | 2006-07-29 |  |  |  | 140 | 0 | 0 | 02C | P0140 | 113 | 0 | 02 | CO | 1P3 | 02C | P0 | P | C |  | C | 21 |  |
| CO02EP0130 |  | 02E LB Pipe Erection |  | 120d | 2007-06-28 | 2007-12-06 | CO02EM0110 FF+24d, CK02EP0110, CO02EV1110 FF+10d, PK000PTA0K, EM02EPI138 FS+30d, EM02ESY272 FS+30d, CO02ES0120 SS+6d, CO02ES0120 FF+6d | 67d | 0d |  | EBWK 6 Day Egypt Holidays |  | 2006-07-29 |  |  |  | 130 | 0 | 0 | 02E | P0130 | 60 | 24 | 02 | CO | 1P2 | 02E | P0 | P | C | L5 | C |  |  |
| CO02JP0130 |  | 02J LB Pipe Erection |  | 73d | 2007-07-12 | 2007-10-27 | CO02JM0110, CO02JM0130, CO02JM0140, CK02JP0110, CO02JV1110, PK000PTA0K FS+30d, EM02JPI138 FS+30d, EM02JSY272 FS+30d, CO02JS0120 SS+6d, CO02JS0120 FF+6d | 98d | 0d |  | EBWK 6 Day Egypt Holidays |  | 2006-07-29 |  |  |  | 130 | 0 | 0 | 02J | P0130 | 73 | 7 | 02 | CO | 1P2 | 02J | P0 | P | C | L4 | C | 21 |  |
| CO02JP0140 |  | 02J SB Pipe Erection |  | 73d | 2007-07-19 | 2007-11-03 | CO02JP0130 SS+6d, CO02JP0130 FF+6d, PK000PIA1P FF+72d | 98d | 0d |  | EBWK 6 Day Egypt Holidays |  | 2006-07-29 |  |  |  | 140 | 0 | 0 | 02J | P0140 | 73 | 7 | 02 | CO | 1P3 | 02J | P0 | P | C |  | C | 21 |  |
| CO02NP0130 |  | 02N LB Pipe Erection |  | 100d | 2007-07-25 | 2007-12-10 | CO02NM0110 FF+24d, CK02NP0110, CO02NV1110 FF+10d, PK000PTA0K FS+30d, CO02NS0120 SS+6d, EM02NPI138 FS+30d, EM02NSY272 FS+30d, CO02NS0120 FF+6d | 56d | 0d |  | EBWK 6 Day Egypt Holidays |  | 2006-07-29 |  |  |  | 130 | 0 | 0 | 02N | P0130 | 9 | -4 | 02 | CO | 1P2 | 02N | P0 | P | C |  | C | 21 |  |
| CO02MP0130 |  | 02M LB Pipe Erection |  | 70d | 2007-07-28 | 2007-11-07 | CO02MM0110 FF+24d, CO02MM0130 FF+24d, CK02MP0110, CO02MV1110 FF+10d, PK000PTA0K FS+30d, EM02MPI138 FS+30d, CO02MM0140 FF+24d, EM02MSY272 FS+30d, CO02MS0120 SS, CO02MS0120 FF | 92d | 0d | start on or after 2007-07-28 | EBWK 6 Day Egypt Holidays |  | 2006-07-29 |  |  |  | 130 | 0 | 0 | 02M | P0130 | 51 | -4 | 02 | CO | 1P2 | 02M | P0 | P | C | L5 | C | 21 |  |
| CO02QP0130 |  | 02Q LB Pipe Erection |  | 60d | 2007-07-29 | 2007-10-28 | CO02QM0110, CK02QP0110, CO02QV1110 FF+10d, PK000PTA0K FS+30d, CO02QS0120 SS+6d, EM02QPI138 FS+30d, EM02QSY272 FS+30d, CO02QS0120 FF+6d | 101d | 0d |  | EBWK 6 Day Egypt Holidays |  | 2006-07-29 |  |  |  | 130 | 0 | 0 | 02Q | P0130 | 14 | 12 | 02 | CO | 1P2 | 02Q | P0 | P | C |  | C | 21 |  |
| CO02FP0130 |  | 02F LB Pipe Erection |  | 54d | 2007-08-04 | 2007-10-27 | CO02FM0110 FF+24d, CO02FM0150 FF+24d, CK02FP0110, CO02FV1110 FF+10d, PK000PTA0K, EM02FPI138 FS+30d, EM02FSY272 FS+30d, CO02FS0120 SS+6d, CO02FS0120 FF+6d | 102d | 0d | start on or after 2007-08-04 | EBWK 6 Day Egypt Holidays |  | 2006-07-29 |  |  |  | 130 | 0 | 0 | 02F | P0130 | 54 | -30 | 02 | CO | 1P2 | 02F | P0 | P | C | L5 | C | 21 |  |
| CO02PP0130 |  | 02P LB Pipe Erection |  | 48d | 2007-08-05 | 2007-10-21 | CO02PM0110 FF+24d, CK02PP0110, CO02PV1110 FF+10d, PK000PTA0K FS+30d, CO02PS0120 SS+6d, EM02PPI138 FS+30d, EM02PSY272 FS+30d, CO02PS0120 FF+6d | 103d | 0d |  | EBWK 6 Day Egypt Holidays |  | 2006-07-29 |  |  |  | 130 | 0 | 0 | 02P | P0130 | 14 | 12 | 02 | CO | 1P2 | 02P | P0 | P | C |  | C | 21 |  |
| CO02DP0130 |  | 02D LB Pipe Erection |  | 70d | 2007-08-11 | 2007-11-21 | CO02DM0110 FF+24d, CO02DM0150 FF+24d, CK02DP0110, CO02DV1110 FF+10d, PK000PTA0K, EM02DPI138 FS+30d, EM02DSY272 FS+30d, CO02DS0120 SS+6d, CO02DS0120 FF+6d | 62d | 0d | start on or after 2007-08-11 | EBWK 6 Day Egypt Holidays |  | 2006-07-29 |  |  |  | 130 | 0 | 0 | 02D | P0130 | 44 | -3 | 02 | CO | 1P2 | 02D | P0 | P | C | L5 | C | 21 |  |
| CO02FP0140 |  | 02F SB Pipe Erection |  | 54d | 2007-08-11 | 2007-11-03 | CO02FP0130 SS+6d, CO02FP0130 FF+6d, PK000PIA1P FF+72d | 102d | 0d |  | EBWK 6 Day Egypt Holidays |  | 2006-07-29 |  |  |  | 140 | 0 | 0 | 02F | P0140 | 54 | -30 | 02 | CO | 1P3 | 02F | P0 | P | C |  | C | 21 |  |
| CO02KP0130 |  | 02K LB Pipe Erection |  | 70d | 2007-08-11 | 2007-11-22 | CO02KM0110, CO02KM0150, CO02KM0130 FF+6d, CK02KP0110, CO02KV1110 FF+24d, PK000PTA0K FS+30d, EM02KPI138 FS+30d, EM02KSY272 FS+30d, CO02KS0120 SS+6d, CO02KS0120 FF+6d | 77d | 0d | start on or after 2007-08-11 | EBWK 6 Day Egypt Holidays |  | 2006-07-29 |  |  |  | 130 | 0.2 | 0 | 02K | P0130 | 70 | -37 | 02 | CO | 1P2 | 02K | P0 | P | C | L5 | C | 21 |  |
| CO02GP0150 |  | 02G Punchlist / Test Piping |  | 48d | 2007-08-15 | 2007-11-01 | CO02GP0140 SS, CO02GP0140 FF+6d, PO000P0020 FF+30d | 105d | 0d |  | EBWK 6 Day Egypt Holidays |  | 2006-07-29 |  |  |  | 150 | 0 | 0 | 02G | P0150 |  | -11 | 02 | CO | 1P4 | 02G | P0 | P | C |  | C |  |  |
| CO02LP0130 |  | 02L LB Pipe Erection |  | 146d | 2007-08-16 | 2008-03-01 | CO02LM0110 FF+24d, CO02LM0120 SS+24d, CO02LM0120 FF+24d, CO02LM0150 FF+24d, CO02LM0130 FF+24d, CO02LM0140 FF+24d, CK02LP0110, CO02LV1110 FF+10d, PK000PTA0K FS+30d, EM02LPI138 FS+30d, EM02LSY272 FS+30d, CO02LS0120 SS+6d, CO02LS0120 FF+6d | -15d | 0d |  | EBWK 6 Day Egypt Holidays |  | 2006-07-29 | 120 | 146 | 155 | 130 | 4.6 | 0 |  |  | 146 | 10 | 02 | CO | 1P2 | 02L | P0 | P | C |  | C | 21 |  |
| CO02AP0130 |  | 02A LB Pipe Erection |  | 65d | 2007-08-18 | 2007-11-22 | CO02AM0110 FF+24d, CO02AM0150 FF+24d, CK02AP0110, CO02AV1110 FF+10d, PK000PTA0K, EM02API138 FS+30d, EM02ASY272 FS+30d, CO02AS0120 SS+6d, CO02AS0120 FF+6d | 78d | 0d | start on or after 2007-08-18 | EBWK 6 Day Egypt Holidays |  | 2006-07-29 |  |  |  | 130 | 0 | 0 | 02A | P0130 | 65 | 0 | 02 | CO | 1P2 | 02A | P0 | P | C | L5 | C | 21 |  |
| CO02BP0130 |  | 02B LB Pipe Erection |  | 24d | 2007-08-18 | 2007-09-15 | CO02BM0110 FF+24d, CK02BP0110, CO02BV1110 FF+10d, PK000PTA0K, EM02BPI138 FS+30d, EM02BSY272 FS+30d, CO02AS0120 SS+6d, CO02AS0120 SF+6d | 120d | 0d | start on or after 2007-08-18 | EBWK 6 Day Egypt Holidays |  | 2006-07-29 |  |  |  | 130 | 0 | 0 | 02B | P0130 | 12 | -12 | 02 | CO | 1P2 | 02B | P0 | P |  | L5 | C | 21 |  |
| CO02KP0140 |  | 02K SB Pipe Erection |  | 70d | 2007-08-18 | 2007-11-29 | CO02KP0130 SS+6d, CO02KP0130 FF+6d, PK000PIA1P FF+72d | 77d | 0d |  | EBWK 6 Day Egypt Holidays |  | 2006-07-29 |  |  |  | 140 | 0.2 | 0 | 02K | P0140 | 70 | -37 | 02 | CO | 1P3 | 02K | P0 | P | C |  | C | 21 |  |
| CO02LP0140 |  | 02L SB Pipe Erection |  | 146d | 2007-08-23 | 2008-03-08 | CO02LP0130 SS+6d, CO02LP0130 FF+6d, PK000PIA1P FF+72d | -15d | 0d |  | EBWK 6 Day Egypt Holidays |  | 2006-07-29 | 120 | 146 | 155 | 140 | 4.6 | 2.5 |  |  | 146 | 10 | 02 | CO | 1P3 | 02L | P0 | P | C |  | C | 21 |  |
| CO02AP0140 |  | 02A SB Pipe Erection |  | 65d | 2007-08-25 | 2007-11-29 | CO02AP0130 SS+6d, CO02AP0130 FF+6d, PK000PIA1P FF+72d | 78d | 0d |  | EBWK 6 Day Egypt Holidays |  | 2006-07-29 |  |  |  | 140 | 0 | 0 | 02A | P0140 | 65 | 0 | 02 | CO | 1P3 | 02A | P0 | P | C |  | C | 21 |  |
| CO02HP0130 |  | 02H LB Pipe Erection |  | 116d | 2007-08-26 | 2008-02-04 | CK02HP0110, CO02HM0130, CO02HM0140, CO02HM0210, CO02HM0215 FF, PK000PTA0K, CO02HV1110, EM02HPI138 FS+30d, CO02HM0248 FF+24d, EM02HSY272 FS+30d, CO02HS0140, CO02HS0110 FF+72d, PO02HS0010 FS+36d, PO02HS0010 FF+36d | 10d | 0d |  | EBWK 6 Day Egypt Holidays |  | 2006-07-29 | 106 | 116 | 121 | 140 | 5 | 2.3 | 02H | P0140 | 116 | -20 | 02 | CO | 1P2 | 02H | P0 | P | C |  | C | 21 | C5 |
| CO02MP0140 |  | 02M SB Pipe Erection |  | 51d | 2007-08-26 | 2007-11-14 | CO02MP0130 SS+6d, CO02MP0130 FF+6d, PK000PIA1P FF+72d | 92d | 0d |  | EBWK 6 Day Egypt Holidays |  | 2006-07-29 |  |  |  | 140 | 0 | 0 | 02M | P0140 | 51 | -4 | 02 | CO | 1P3 | 02M | P0 | P | C |  | C | 21 |  |
| CO02CP0150 |  | 02C Punchlist / Test Piping |  | 56d | 2007-08-27 | 2007-11-21 | CO02CP0140 SS, CO02CP0140 FF+6d, PO000P0020 FF+30d | 83d | 0d |  | EBWK 6 Day Egypt Holidays |  | 2006-07-29 |  |  |  | 150 | 0 | 0 | 02C | P0150 |  | 0 | 02 | CO | 1P4 | 02C | P0 | P | C |  | C |  |  |
| CO02HP0140 |  | 02H SB Pipe Erection |  | 116d | 2007-09-02 | 2008-02-11 | CO02HP0130 SS+6d, CO02HV1110 FF+24d, PK000PIA1P FF+72d | 10d | 0d |  | EBWK 6 Day Egypt Holidays |  | 2006-07-29 | 106 | 116 | 121 | 140 | 5 | 0 | 02H | P0140 | 116 | -20 | 02 | CO | 1P3 | 02H | P0 | P | C |  | C | 21 | C5 |
| CO02BP0140 |  | 02B SB Pipe Erection |  | 12d | 2007-09-08 | 2007-09-29 | CO02BP0130 SS+6d, CO02BP0130 FF+6d, PK000PIA1P FF+72d | 120d | 0d |  | EBWK 6 Day Egypt Holidays |  | 2006-07-29 |  |  |  | 140 | 0 | 0 | 02B | P0140 | 12 | 24.00208333 | 02 | CO | 1P3 | 02B | P0 | P |  |  | C | 21 |  |
| CO02JP0150 |  | 02J Punchlist / Test Piping |  | 36d | 2007-09-08 | 2007-11-10 | CO02JP0140 SS, CO02JP0140 FF+6d, PO000P0020 FF+30d | 102d | 0d |  | EBWK 6 Day Egypt Holidays |  | 2006-07-29 |  |  |  | 150 | 0 | 0 | 02J | P0150 |  | 7 | 02 | CO | 1P4 | 02J | P0 | P | C |  | C |  |  |
| CO02YP0150 |  | 02Y Punchlist / Test Piping |  | 60d | 2007-09-09 | 2007-12-09 | CO02YP0140 SS, CO02YP0140 FF+6d, PO000P0020 FF+30d | 65d | 0d |  | EBWK 6 Day Egypt Holidays |  | 2006-07-29 |  |  |  | 150 | 0 | 0 | 02Y | P0150 |  | 12 | 02 | CO | 1P4 | 02Y | P0 | P | C |  | C |  |  |
| CO02EP0140 |  | 02E SB Pipe Erection |  | 60d | 2007-09-15 | 2007-12-13 | CO02EP0130 SS+6d, CO02EP0130 FF+6d, PK000PIA1P FF+72d | 67d | 0d |  | EBWK 6 Day Egypt Holidays |  | 2006-07-29 |  |  |  | 140 | 0 | 0 | 02E | P0140 | 60 | 24 | 02 | CO | 1P3 | 02E | P0 | P | C |  | C |  |  |
| CO02FP0150 |  | 02F Punchlist / Test Piping |  | 27d | 2007-09-24 | 2007-11-10 | CO02FP0140 SS, CO02FP0140 FF+6d, PO000P0020 FF+30d | 102d | 0d |  | EBWK 6 Day Egypt Holidays |  | 2006-07-29 |  |  |  | 150 | 0 | 0 | 02F | P0150 |  | -30 | 02 | CO | 1P4 | 02F | P0 | P | C |  | C |  |  |
| CO02PP0140 |  | 02P SB Pipe Erection |  | 14d | 2007-09-29 | 2007-10-28 | CO02PP0130 SS+6d, CO02PP0130 FF+6d, PK000PIA1P FF+72d | 103d | 0d |  | EBWK 6 Day Egypt Holidays |  | 2006-07-29 |  |  |  | 140 | 0 | 0 | 02P | P0140 | 14 | 12 | 02 | CO | 1P3 | 02P | P0 | P | C |  | C | 21 |  |
| CO02BP0150 |  | 02B Punchlist / Test Piping |  | 6d | 2007-10-01 | 2007-10-20 | CO02BP0140 SS, CO02BP0140 FF+6d, PO000P0020 FF+30d | 120d | 0d |  | EBWK 6 Day Egypt Holidays |  | 2006-07-29 |  |  |  | 150 | 0 | 0 | 02B | P0150 |  | 24.00208333 | 02 | CO | 1P4 | 02B | P0 | P |  |  | C |  |  |
| CO02QP0140 |  | 02Q SB Pipe Erection |  | 14d | 2007-10-20 | 2007-11-04 | CO02QP0130 SS+6d, CO02QP0130 FF+6d, PK000PIA1P FF+72d | 101d | 0d |  | EBWK 6 Day Egypt Holidays |  | 2006-07-29 |  |  |  | 140 | 0 | 0 | 02Q | P0140 | 14 | 12 | 02 | CO | 1P3 | 02Q | P0 | P | C |  | C | 21 |  |
| CO02MP0150 |  | 02M Punchlist / Test Piping |  | 25d | 2007-10-24 | 2007-11-21 | CO02MP0140 SS, CO02MP0140 FF+6d, PO000P0020 FF+30d | 92d | 0d |  | EBWK 6 Day Egypt Holidays |  | 2006-07-29 |  |  |  | 150 | 0 | 0 | 02M | P0150 | 25 | -4 | 02 | CO | 1P4 | 02M | P0 | P | C |  | C | 23 |  |
| CO02KP0150 |  | 02K Punchlist / Test Piping |  | 35d | 2007-10-27 | 2007-12-06 | CO02KP0140 SS, CO02KP0140 FF+6d, PO000P0020 FF+30d | 80d | 0d |  | EBWK 6 Day Egypt Holidays |  | 2006-07-29 |  |  |  | 150 | 0 | 0 | 02K | P0150 |  | -37 | 02 | CO | 1P4 | 02K | P0 | P | C |  | C |  |  |
| CO02PP0150 |  | 02P Punchlist / Test Piping |  | 7d | 2007-10-28 | 2007-11-04 | CO02PP0140 SS+6d, CO02PP0140 FF+6d, PO000P0020 FF+30d | 107d | 0d |  | EBWK 6 Day Egypt Holidays |  | 2006-07-29 |  |  |  | 150 | 0 | 0 | 02P | P0150 |  | 12 | 02 | CO | 1P4 | 02P | P0 | P | C |  | C |  |  |
| CO02DP0140 |  | 02D SB Pipe Erection |  | 44d | 2007-10-30 | 2007-12-25 | CO02DP0130 SS+24d, CO02DP0130 FF+24d, PK000PIA1P FF+72d | 62d | 0d |  | EBWK 6 Day Egypt Holidays |  | 2006-07-29 |  |  |  | 140 | 0 | 0 | 02D | P0140 | 44 | -3 | 02 | CO | 1P3 | 02D | P0 | P | C |  | C | 21 |  |
| CO02AP0150 |  | 02A Punchlist / Test Piping |  | 32d | 2007-10-31 | 2007-12-06 | CO02AP0140 SS, CO02AP0140 FF+6d, PO000P0020 FF+30d | 79d | 0d |  | EBWK 6 Day Egypt Holidays |  | 2006-07-29 |  |  |  | 150 | 0 | 0 | 02A | P0150 |  | 0 | 02 | CO | 1P4 | 02A | P0 | P | C |  | C |  |  |
| CO02QP0150 |  | 02Q Punchlist / Test Piping |  | 7d | 2007-11-04 | 2007-11-11 | CO02QP0140 SS, CO02QP0140 FF+6d, PO000P0020 FF+30d | 101d | 0d |  | EBWK 6 Day Egypt Holidays |  | 2006-07-29 |  |  |  | 150 | 0 | 0 | 02Q | P0150 |  | 12 | 02 | CO | 1P4 | 02Q | P0 | P | C |  | C |  |  |
| CO02EP0150 |  | 02E Punchlist / Test Piping |  | 30d | 2007-11-17 | 2007-12-26 | CO02EP0140 SS, CO02EP0140 FF+6d, PO000P0020 FF+30d | 67d | 0d |  | EBWK 6 Day Egypt Holidays |  | 2006-07-29 |  |  |  | 150 | 0 | 0 | 02E | P0150 |  | 24 | 02 | CO | 1P4 | 02E | P0 | P | C |  | C |  |  |
| CO02DP0150 |  | 02D Punchlist / Test Piping |  | 22d | 2007-12-02 | 2008-01-01 | CO02DP0140 SS, CO02DP0140 FF+6d, PO000P0020 FF+30d | 62d | 0d |  | EBWK 6 Day Egypt Holidays |  | 2006-07-29 |  |  |  | 150 | 0 | 0 | 02D | P0150 |  | -3 | 02 | CO | 1P4 | 02D | P0 | P | C |  | C |  |  |
| CO02NP0140 |  | 02N SB Pipe Erection |  | 9d | 2007-12-08 | 2007-12-17 | CO02NP0130 SS+6d, CO02NP0130 FF+6d, PK000PIA1P FF+72d | 56d | 0d |  | EBWK 6 Day Egypt Holidays |  | 2006-07-29 |  |  |  | 140 | 0 | 0 | 02N | P0140 | 9 | -4 | 02 | CO | 1P3 | 02N | P0 | P | C |  | C | 21 |  |
| CO02HP0150 |  | 02H Punchlist / Test Piping |  | 55d | 2007-12-11 | 2008-02-18 | CO02HP0140 SS, CO02HP0140 FF+6d, PO000P0020 FF+30d | 10d | 0d |  | EBWK 6 Day Egypt Holidays |  | 2006-07-29 | 50 | 55 | 60 | 150 | 1.3 | 0 | 02H | P0150 |  | -20 | 02 | CO | 1P4 | 02H | P0 | P | C |  | C |  | C5 |
| CO02LP0150 |  | 02L Punchlist / Test Piping |  | 73d | 2007-12-16 | 2008-03-15 | CO02LP0140 SS, CO02LP0140 FF+6d, PO000P0020 FF+30d | -15d | 0d |  | EBWK 6 Day Egypt Holidays |  | 2006-07-29 | 65 | 73 | 78 | 150 | 1 | 0 |  |  |  | 10 | 02 | CO | 1P4 | 02L | P0 | P | C |  | C |  |  |
| CO02NP0150 |  | 02N Punchlist / Test Piping |  | 4d | 2007-12-26 | 2007-12-30 | CO02NP0140 SS, CO02NP0140 FF+6d, PO000P0020 FF+30d | 56d | 0d |  | EBWK 6 Day Egypt Holidays |  | 2006-07-29 |  |  |  | 150 | 0 | 0 | 02N | P0150 |  | -4 | 02 | CO | 1P4 | 02N | P0 | P | C |  | C |  |  |

Notes:
- CO02YP0130: P3 Activity Log Info: Plant L.O. thru start erection of pipe 58 / weeks
- CO02GP0130: P3 Activity Log Info: Plant L.O. thru start erection of pipe 58 / weeks
- CO02CP0130: P3 Activity Log Info: Plant L.O. thru start erection of pipe 58 / weeks
- CO02YP0140: P3 Activity Log Info: Plant L.O. thru start erection of pipe 58 / weeks
- CO02GP0140: P3 Activity Log Info: Plant L.O. thru start erection of pipe 58 / weeks
- CO02CP0140: P3 Activity Log Info: Plant L.O. thru start erection of pipe 58 / weeks
- CO02EP0130: P3 Activity Log Info: Plant L.O. thru start erection of pipe 58 / weeks
- CO02JP0130: P3 Activity Log Info: Plant L.O. thru start erection of pipe 58 / weeks
- CO02JP0140: P3 Activity Log Info: Plant L.O. thru start erection of pipe 58 / weeks
- CO02NP0130: P3 Activity Log Info: Plant L.O. thru start erection of pipe 58 / weeks
- CO02MP0130: P3 Activity Log Info: Plant L.O. thru start erection of pipe 58 / weeks
- CO02QP0130: P3 Activity Log Info: Plant L.O. thru start erection of pipe 58 / weeks
- CO02FP0130: P3 Activity Log Info: Plant L.O. thru start erection of pipe 58 / weeks
- CO02PP0130: P3 Activity Log Info: Plant L.O. thru start erection of pipe 58 / weeks
- CO02DP0130: P3 Activity Log Info: Plant L.O. thru start erection of pipe 58 / weeks
- CO02FP0140: P3 Activity Log Info: Plant L.O. thru start erection of pipe 58 / weeks
- CO02KP0130: P3 Activity Log Info: Plant L.O. thru start erection of pipe 58 / weeks
- CO02LP0130: P3 Activity Log Info: Plant L.O. thru start erection of pipe 58 / weeks
- CO02AP0130: P3 Activity Log Info: Plant L.O. thru start erection of pipe 58 / weeks
- CO02BP0130: P3 Activity Log Info: Plant L.O. thru start erection of pipe 58 / weeks
- CO02KP0140: P3 Activity Log Info: Plant L.O. thru start erection of pipe 58 / weeks
- CO02LP0140: P3 Activity Log Info: Plant L.O. thru start erection of pipe 58 / weeks
- CO02AP0140: P3 Activity Log Info: Plant L.O. thru start erection of pipe 58 / weeks
- CO02HP0130: P3 Activity Log Info: Plant L.O. thru start erection of pipe 58 / weeks
- CO02MP0140: P3 Activity Log Info: Plant L.O. thru start erection of pipe 58 / weeks
- CO02HP0140: P3 Activity Log Info: Plant L.O. thru start erection of pipe 58 / weeks
- CO02BP0140: P3 Activity Log Info: Plant L.O. thru start erection of pipe 58 / weeks
- CO02EP0140: P3 Activity Log Info: Plant L.O. thru start erection of pipe 58 / weeks
- CO02PP0140: P3 Activity Log Info: Plant L.O. thru start erection of pipe 58 / weeks
- CO02QP0140: P3 Activity Log Info: Plant L.O. thru start erection of pipe 58 / weeks
- CO02DP0140: P3 Activity Log Info: Plant L.O. thru start erection of pipe 58 / weeks
- CO02NP0140: P3 Activity Log Info: Plant L.O. thru start erection of pipe 58 / weeks

| ID | WBS | Activity | Type | Duration | Start | Finish | Predecessors | Total float | Free float | Calendar | Resources | zData Date | Sequence | PCA Criticality Index | PCA Duration Sensitivity | User Defined Field 1 | User Definer Field 2 | user_number1 | EB02 - UNIT | EB01 - RESP | EB06 - WORK OP | EB03 - AREA | EB05 - DISCIPLINE | EB04 - CLASS | EB11 - FLAG | EB00 - EPC | Optimistic Duration | Most Likely Duration | Pessimistic Duration | EB22 - Critical Actvities |
| --- | --- | --- | --- | --- | --- | --- | --- | --- | --- | --- | --- | --- | --- | --- | --- | --- | --- | --- | --- | --- | --- | --- | --- | --- | --- | --- | --- | --- | --- | --- |
|  | E0 | **A/G Electrical** |  |  | 2007-06-25 | 2008-03-15 |  |  |  |  |  |  |  |  |  |  |  |  |  |  |  |  |  |  |  |  |  |  |  |  |
| CO02GE0130 |  | 02G Power/Control JB's, Tray, Cable, Termination |  | 92d | 2007-06-25 | 2007-11-01 | CO02GM0150 FF+24d, CO02GP0140 FF+6d, CO02GM0140 FF+40d, PO000E0010 FS+30d, CO02GC0130 | 108d | 0d | EBWK 6 Day Egypt Holidays |  | 2006-07-29 | 130 | 0 | 0 | 02G | E0130 | -11 | 02 | CO | 1E1 | 02G | E0 | E | C | C |  |  |  |  |
| WO020E0100 |  | 020 Above Ground Electrical | WBS summary | 203d | 2007-06-25 | 2008-03-15 | EK000YA000 | 23d | 339d | EBWK 6 Day Egypt Holidays | Aboveground Electrical - Construction [221337 h] | 2006-07-29 | P00 | 0 | 0 | 02A | E0P00 |  | 02 | CO | E00 | 020 | E0 | E | WC | C |  |  |  |  |
| CO02CE0130 |  | 02C Power/Control JB's, Tray, Cable, Termination |  | 105d | 2007-07-01 | 2007-11-21 | CO02CM0150 FF+24d, CO02CP0140 FF+6d, PO000E0010 FS+30d, CO02CC0130 | 88d | 0d | EBWK 6 Day Egypt Holidays |  | 2006-07-29 | 130 | 0 | 0 | 02C | E0130 | 8 | 02 | CO | 1E1 | 02C | E0 | E | C | C |  |  |  |  |
| CO02LE0110 |  | 02L Lighting JB's, Stands, Tray & Cable |  | 36d | 2007-07-05 | 2007-08-15 | CO02LS0120, PO000E0010 FS+30d, EM020ELEJ2 FF+30d, CO02LC0130 | 163d | 0d | EBWK 6 Day Egypt Holidays |  | 2006-07-29 | 110 | 0 | 0 |  |  | 10 | 02 | CO | 1E2 | 02L | E0 | E | C | C |  |  |  |  |
| CO02BE0110 |  | 02B Lighting JB's, Stands, Tray & Cable |  | 12d | 2007-07-12 | 2007-07-25 | PO000E0010 FS+30d, EM020ELEJ2 FF+30d, CO02AS0120 SS, CO02BC0130 | 193d | 0d | EBWK 6 Day Egypt Holidays |  | 2006-07-29 | 110 | 0 | 0 | 02B | E0110 | 26 | 02 | CO | 1E2 | 02B | E0 | E |  | C |  |  |  |  |
| CO02EE0110 |  | 02E Lighting JB's, Stands, Tray & Cable |  | 24d | 2007-07-12 | 2007-08-08 | CO02ES0120, PO000E0010 FS+30d, EM020ELEJ2 FF+30d, CO02EC0130 | 175d | 0d | EBWK 6 Day Egypt Holidays |  | 2006-07-29 | 110 | 0 | 0 | 02E | E0110 | 6 | 02 | CO | 1E2 | 02E | E0 | E | C | C |  |  |  |  |
| CO02FE0110 |  | 02F Lighting JB's, Stands, Tray & Cable |  | 24d | 2007-07-12 | 2007-08-08 | CO02FS0120, PO000E0010 FS+30d, EM020ELEJ2 FF+30d, CO02FC0130 | 175d | 0d | EBWK 6 Day Egypt Holidays |  | 2006-07-29 | 110 | 0 | 0 | 02F | E0110 | 21 | 02 | CO | 1E2 | 02F | E0 | E | C | C |  |  |  |  |
| CO02JE0110 |  | 02J Lighting JB's, Stands, Tray & Cable |  | 36d | 2007-07-12 | 2007-08-22 | CO02JS0120, CO02JM0110, PO000E0010 FS+30d, EM020ELEJ2 FF+30d, CO02JC0130 | 157d | 0d | EBWK 6 Day Egypt Holidays |  | 2006-07-29 | 110 | 0 | 0 | 02J | E0110 | 18 | 02 | CO | 1E2 | 02J | E0 | E | C | C |  |  |  |  |
| CO02ME0110 |  | 02M Lighting JB's, Stands, Tray & Cable |  | 24d | 2007-07-12 | 2007-08-08 | CO02MS0120, PO000E0010 FS+30d, EM020ELEJ2 FF+30d, CO02MC0130 | 175d | 0d | EBWK 6 Day Egypt Holidays |  | 2006-07-29 | 110 | 0 | 0 | 02M | E0110 | 1 | 02 | CO | 1E2 | 02M | E0 | E | C | C |  |  |  |  |
| CO02DE0110 |  | 02D Lighting JB's, Stands, Tray & Cable |  | 24d | 2007-07-19 | 2007-08-15 | CO02DS0120, PO000E0010 FS+30d, EM020ELEJ2 FF+30d, CO02DC0130 | 169d | 0d | EBWK 6 Day Egypt Holidays |  | 2006-07-29 | 110 | 0 | 0 | 02D | E0110 | 6 | 02 | CO | 1E2 | 02D | E0 | E | C | C |  |  |  |  |
| CO02BE0120 |  | 02B Lighting Fixture Installation/Termination |  | 6d | 2007-07-26 | 2007-08-01 | CO02BE0110 | 193d | 118d | EBWK 6 Day Egypt Holidays |  | 2006-07-29 | 120 | 0 | 0 | 02B | E0120 | 26 | 02 | CO | 1E3 | 02B | E0 | E |  | C |  |  |  |  |
| CO02KE0110 |  | 02K Lighting JB's, Stands, Tray & Cable |  | 36d | 2007-07-28 | 2007-09-08 | CO02KS0120, PO000E0010 FS+30d, EM020ELEJ2 FF+30d, CO02KC0130 | 144d | 0d | EBWK 6 Day Egypt Holidays |  | 2006-07-29 | 110 | 0 | 0 | 02K | E0110 | 26 | 02 | CO | 1E2 | 02K | E0 | E | C | C |  |  |  |  |
| CO02YE0110 |  | 02Y Lighting JB's, Stands, Tray & Cable |  | 72d | 2007-07-29 | 2007-11-11 | CO02YS0120, CO02YP0130 SS+36d, CO02YP0130 FF+6d, EM020ELEJ2 FF+30d, PO000E0010 FS+30d, CO02YC0130 | 90d | 0d | EBWK 6 Day Egypt Holidays |  | 2006-07-29 | 110 | 0 | 0 | 02Y | E0110 | 12 | 02 | CO | 1E2 | 02Y | E0 | E | C | C |  |  |  |  |
| CO02JE0130 |  | 02J Power/Control JB's, Tray, Cable, Termination |  | 68d | 2007-08-01 | 2007-11-10 | CO02JP0140 FF+6d, PO000E0010 FS+30d, CO02JC0130 | 98d | 0d | EBWK 6 Day Egypt Holidays |  | 2006-07-29 | 130 | 0 | 0 | 02J | E0130 | 7 | 02 | CO | 1E1 | 02J | E0 | E | C | C |  |  |  |  |
| CO02AE0110 |  | 02A Lighting JB's, Stands, Tray & Cable |  | 24d | 2007-08-02 | 2007-08-29 | CO02AS0120, PO000E0010 FS+30d, EK020EL165 FS+30d, EK020EL185 FS+30d, EM020ELEJ2 FF+30d, CO02AC0130 | 157d | 0d | EBWK 6 Day Egypt Holidays |  | 2006-07-29 | 110 | 0 | 0 | 02A | E0110 | 0 | 02 | CO | 1E2 | 02A | E0 | E | C | C |  |  |  |  |
| CO02GE0110 |  | 02G Lighting JB's, Stands, Tray & Cable |  | 36d | 2007-08-05 | 2007-09-17 | PO000E0010 FS+30d, CO02GM0140, CO02GS0130 FF+12d, EM020ELEJ2 FF+30d, CO02GC0130 | 149d | 0d | EBWK 6 Day Egypt Holidays |  | 2006-07-29 | 110 | 12.5 | 0 | 02G | E0110 | -36 | 02 | CO | 1E2 | 02G | E0 | E | C | C | 31 | 36 | 41 |  |
| CO02EE0120 |  | 02E Lighting Fixture Installation/Termination |  | 12d | 2007-08-09 | 2007-08-22 | CO02EE0110 | 175d | 110d | EBWK 6 Day Egypt Holidays |  | 2006-07-29 | 120 | 0 | 0 | 02E | E0120 | 6 | 02 | CO | 1E3 | 02E | E0 | E | C | C |  |  |  |  |
| CO02FE0120 |  | 02F Lighting Fixture Installation/Termination |  | 12d | 2007-08-09 | 2007-08-22 | CO02FE0110 | 175d | 115d | EBWK 6 Day Egypt Holidays |  | 2006-07-29 | 120 | 0 | 0 | 02F | E0120 | 21 | 02 | CO | 1E3 | 02F | E0 | E | C | C |  |  |  |  |
| CO02ME0120 |  | 02M Lighting Fixture Installation/Termination |  | 12d | 2007-08-09 | 2007-08-22 | CO02ME0110 | 175d | 109d | EBWK 6 Day Egypt Holidays |  | 2006-07-29 | 120 | 0 | 0 | 02M | E0120 | 1 | 02 | CO | 1E3 | 02M | E0 | E | C | C |  |  |  |  |
| CO02QE0110 |  | 02Q Lighting JB's, Stands, Tray & Cable |  | 6d | 2007-08-12 | 2007-08-18 | CO02QS0120, PO000E0010 FS+30d, EM020ELEJ2 FF+30d | 162d | 0d | EBWK 6 Day Egypt Holidays |  | 2006-07-29 | 110 | 0 | 0 | 02Q | E0110 | 12 | 02 | CO | 1E2 | 02Q | E0 | E | C | C |  |  |  |  |
| CO02DE0120 |  | 02D Lighting Fixture Installation/Termination |  | 12d | 2007-08-16 | 2007-08-29 | CO02DE0110 | 169d | 98d | EBWK 6 Day Egypt Holidays |  | 2006-07-29 | 120 | 0 | 0 | 02D | E0120 | 6 | 02 | CO | 1E3 | 02D | E0 | E | C | C |  |  |  |  |
| CO02LE0120 |  | 02L Lighting Fixture Installation/Termination |  | 18d | 2007-08-16 | 2007-09-05 | CO02LE0110 | 163d | 146d | EBWK 6 Day Egypt Holidays |  | 2006-07-29 | 120 | 0 | 0 |  |  | 10 | 02 | CO | 1E3 | 02L | E0 | E | C | C |  |  |  |  |
| CO02QE0120 |  | 02Q Lighting Fixture Installation/Termination |  | 6d | 2007-08-19 | 2007-08-25 | CO02QE0110 | 173d | 106d | EBWK 6 Day Egypt Holidays |  | 2006-07-29 | 120 | 0 | 0 | 02Q | E0120 | 12 | 02 | CO | 1E3 | 02Q | E0 | E | C | C |  |  |  |  |
| CO02YE0130 |  | 02Y Power/Control JB's, Tray, Cable, Termination |  | 84d | 2007-08-19 | 2007-12-16 | CO02YP0140 FF+6d, CO02YP0130 SS+36d, CO02YP0130 FF+36d, PO000E0010 FS+30d, EK020EL130 FS+30d, CO02YC0130 | -35d | 0d | EBWK 6 Day Egypt Holidays |  | 2006-07-29 | 130 | 47.3 | 0 | 02Y | E0130 | 12 | 02 | CO | 1E1 | 02Y | E0 | E | C | C | 60 | 84 | 84 | C3 |
| CO02FE0130 |  | 02F Power/Control JB's, Tray, Cable, Termination |  | 51d | 2007-08-21 | 2007-11-10 | CO02FM0150 FF+24d, CO02FP0140 FF+6d, PO000E0010 FS+30d, CO02FC0130 | 104d | 0d | EBWK 6 Day Egypt Holidays |  | 2006-07-29 | 130 | 0 | 0 | 02F | E0130 | -21 | 02 | CO | 1E1 | 02F | E0 | E | C | C |  |  |  |  |
| CO02NE0110 |  | 02N Lighting JB's, Stands, Tray & Cable |  | 18d | 2007-08-22 | 2007-09-11 | CO02NS0120, PO000E0010 FS+30d, EM020ELEJ2 FF+30d | 152d | 0d | EBWK 6 Day Egypt Holidays |  | 2006-07-29 | 110 | 0 | 0 | 02N | E0110 | -4 | 02 | CO | 1E2 | 02N | E0 | E | C | C |  |  |  |  |
| CO02JE0120 |  | 02J Lighting Fixture Installation/Termination |  | 18d | 2007-08-23 | 2007-09-12 | CO02JE0110 | 157d | 93d | EBWK 6 Day Egypt Holidays |  | 2006-07-29 | 120 | 0 | 0 | 02J | E0120 | 18 | 02 | CO | 1E3 | 02J | E0 | E | C | C |  |  |  |  |
| CO02PE0110 |  | 02P Lighting JB's, Stands, Tray & Cable |  | 6d | 2007-08-26 | 2007-09-01 | CO02PS0120, PO000E0010 FS+30d, EM020ELEJ2 FF+30d | 150d | 0d | EBWK 6 Day Egypt Holidays |  | 2006-07-29 | 110 | 0 | 0 | 02P | E0110 | 12 | 02 | CO | 1E2 | 02P | E0 | E | C | C |  |  |  |  |
| CO02KE0130 |  | 02K Power/Control JB's, Tray, Cable, Termination |  | 66d | 2007-08-29 | 2007-12-06 | CO02KM0150 FF+24d, CO02KP0140 FF+6d, PO000E0010 FS+30d, CO02KC0130 | 77d | 0d | EBWK 6 Day Egypt Holidays |  | 2006-07-29 | 130 | 0.2 | 0 | 02K | E0130 | -19 | 02 | CO | 1E1 | 02K | E0 | E | C | C |  |  |  |  |
| CO02AE0120 |  | 02A Lighting Fixture Installation/Termination |  | 12d | 2007-08-30 | 2007-09-12 | CO02AE0110, EK020EL165 FS+30d, EK020EL185 FS+30d | 157d | 86d | EBWK 6 Day Egypt Holidays |  | 2006-07-29 | 120 | 0 | 0 | 02A | E0120 | 0 | 02 | CO | 1E3 | 02A | E0 | E | C | C |  |  |  |  |
| CO02CE0110 |  | 02C Lighting JB's, Stands, Tray & Cable |  | 36d | 2007-09-02 | 2007-11-04 | CO02CS0120, PO000E0010 FS+30d, EM020ELEJ2 FF+30d, CO02CC0130 | 113d | 0d | EBWK 6 Day Egypt Holidays |  | 2006-07-29 | 110 | 0 | 0 | 02C | E0110 | 26 | 02 | CO | 1E2 | 02C | E0 | E | C | C |  |  |  |  |
| CO02GE0120 |  | 02G Lighting Fixture Installation/Termination |  | 18d | 2007-09-02 | 2007-10-01 | CO02GE0110 FF+6d, CO02GE0110 SS+18d | 149d | 75d | EBWK 6 Day Egypt Holidays |  | 2006-07-29 | 120 | 12.5 | 1 | 02G | E0120 | -36 | 02 | CO | 1E3 | 02G | E0 | E | C | C | 17 | 18 | 20 |  |
| CO02PE0120 |  | 02P Lighting Fixture Installation/Termination |  | 6d | 2007-09-02 | 2007-09-08 | CO02PE0110 | 161d | 93d | EBWK 6 Day Egypt Holidays |  | 2006-07-29 | 120 | 0 | 0 | 02P | E0120 | 12 | 02 | CO | 1E3 | 02P | E0 | E | C | C |  |  |  |  |
| CO02AE0130 |  | 02A Power/Control JB's, Tray, Cable, Termination |  | 60d | 2007-09-06 | 2007-12-06 | CO02AM0150 FF+24d, CO02AP0140 FF+6d, PO000E0010 FS+30d, CO02AC0130 | 78d | 0d | EBWK 6 Day Egypt Holidays |  | 2006-07-29 | 130 | 0 | 0 | 02A | E0130 | 6 | 02 | CO | 1E1 | 02A | E0 | E | C | C |  |  |  |  |
| CO02ME0130 |  | 02M Power/Control JB's, Tray, Cable, Termination |  | 47d | 2007-09-06 | 2007-11-21 | CO02MP0140 FF+6d, PO000E0010 FS+30d, CO02MC0130 | 95d | 0d | EBWK 6 Day Egypt Holidays |  | 2006-07-29 | 130 | 0 | 0 | 02M | E0130 | -4 | 02 | CO | 1E1 | 02M | E0 | E | C | C |  |  |  |  |
| CO02KE0120 |  | 02K Lighting Fixture Installation/Termination |  | 18d | 2007-09-08 | 2007-10-21 | CO02KE0110 | 144d | 75d | EBWK 6 Day Egypt Holidays |  | 2006-07-29 | 120 | 0 | 0 | 02K | E0120 | 26 | 02 | CO | 1E3 | 02K | E0 | E | C | C |  |  |  |  |
| CO02LE0130 |  | 02L Power/Control JB's, Tray, Cable, Termination |  | 137d | 2007-09-10 | 2008-03-15 | CO02LM0150 FF+24d, CO02LP0140 FF+6d, CO02LM0120, PO000E0010 FS+30d, CO02LC0130 | -12d | 0d | EBWK 6 Day Egypt Holidays |  | 2006-07-29 | 130 | 3.2 | 0 |  |  | 10 | 02 | CO | 1E1 | 02L | E0 | E | C | C | 113 | 137 | 137 |  |
| CO02NE0120 |  | 02N Lighting Fixture Installation/Termination |  | 6d | 2007-09-12 | 2007-09-24 | CO02NE0110 | 152d | 83d | EBWK 6 Day Egypt Holidays |  | 2006-07-29 | 120 | 0 | 0 | 02N | E0120 | -4 | 02 | CO | 1E3 | 02N | E0 | E | C | C |  |  |  |  |
| CO02HE0130 |  | 02H Power/Control JB's, Tray, Cable, Termination |  | 109d | 2007-09-22 | 2008-02-18 | CO02HP0140 FF+6d, CO02HM0230, PO000E0010 FS+30d, CO02HC0130 | 15d | 0d | EBWK 6 Day Egypt Holidays |  | 2006-07-29 | 130 | 3.6 | 3.5 | 02H | E0130 | -20 | 02 | CO | 1E1 | 02H | E0 | E | C | C | 99 | 109 | 114 |  |
| CO02BE0130 |  | 02B Power/Control JB's, Tray, Cable, Termination |  | 7d | 2007-09-29 | 2007-10-20 | CO02BP0140 FF+6d, PO000E0010 FS+30d, CO02BC0130 | 136d | 0d | EBWK 6 Day Egypt Holidays |  | 2006-07-29 | 130 | 0 | 0 | 02B | E0130 | 26 | 02 | CO | 1E1 | 02B | E0 | E |  | C |  |  |  |  |
| CO02EE0130 |  | 02E Power/Control JB's, Tray, Cable, Termination |  | 56d | 2007-10-08 | 2007-12-26 | CO02EP0140 FF+6d, PO000E0010 FS+30d, CO02EC0130 | 67d | 0d | EBWK 6 Day Egypt Holidays |  | 2006-07-29 | 130 | 0 | 0 | 02E | E0130 | 26 | 02 | CO | 1E1 | 02E | E0 | E | C | C |  |  |  |  |
| CO02HE0110 |  | 02H Lighting JB's, Stands, Tray & Cable |  | 36d | 2007-10-24 | 2007-12-04 | CO02HM0210, PO000E0010 FS+30d, EM020ELEJ2 FF+30d, CO02HS0110 SS+24d, PO02HS0010 FS+30d, CO02HC0130 | 87d | 0d | EBWK 6 Day Egypt Holidays |  | 2006-07-29 | 110 | 0 | 0 | 02H | E0110 | 5 | 02 | CO | 1E2 | 02H | E0 | E | C | C |  |  |  |  |
| CO02CE0120 |  | 02C Lighting Fixture Installation/Termination |  | 18d | 2007-11-05 | 2007-11-25 | CO02CE0110 | 113d | 50d | EBWK 6 Day Egypt Holidays |  | 2006-07-29 | 120 | 0 | 0 | 02C | E0120 | 26 | 02 | CO | 1E3 | 02C | E0 | E | C | C |  |  |  |  |
| CO02DE0130 |  | 02D Power/Control JB's, Tray, Cable, Termination |  | 41d | 2007-11-10 | 2008-01-01 | CO02DM0150 FF+24d, CO02DP0140 FF+6d, PO000E0010 FS+30d, CO02DC0130 | 68d | 0d | EBWK 6 Day Egypt Holidays |  | 2006-07-29 | 130 | 0 | 0 | 02D | E0130 | -3 | 02 | CO | 1E1 | 02D | E0 | E | C | C |  |  |  |  |
| CO02YE0120 |  | 02Y Lighting Fixture Installation/Termination |  | 35d | 2007-11-12 | 2007-12-27 | CO02YE0110 | 90d | 31d | EBWK 6 Day Egypt Holidays |  | 2006-07-29 | 120 | 0 | 0 | 02Y | E0120 | 12 | 02 | CO | 1E3 | 02Y | E0 | E | C | C |  |  |  |  |
| CO02HE0120 |  | 02H Lighting Fixture Installation/Termination |  | 18d | 2007-12-05 | 2007-12-31 | CO02HE0110 | 87d | 72d | EBWK 6 Day Egypt Holidays |  | 2006-07-29 | 120 | 0 | 0 | 02H | E0120 | 5 | 02 | CO | 1E3 | 02H | E0 | E | C | C |  |  |  |  |
| CO02NE0130 |  | 02N Power/Control JB's, Tray, Cable, Termination |  | 9d | 2007-12-15 | 2007-12-30 | CO02NP0140 FF+6d, PO000E0010 FS+30d | 80d | 0d | EBWK 6 Day Egypt Holidays |  | 2006-07-29 | 130 | 0 | 0 | 02N | E0130 | -4 | 02 | CO | 1E1 | 02N | E0 | E | C | C |  |  |  |  |

| ID | WBS | Activity | Type | Duration | Start | Finish | Predecessors | Total float | Free float | Calendar | Resources | zData Date | Sequence | PCA Criticality Index | PCA Duration Sensitivity | User Defined Field 1 | User Definer Field 2 | user_number1 | EB02 - UNIT | EB01 - RESP | EB06 - WORK OP | EB03 - AREA | EB05 - DISCIPLINE | EB04 - CLASS | EB11 - FLAG | EB00 - EPC | EB22 - Critical Actvities | Optimistic Duration | Most Likely Duration | Pessimistic Duration | EB08 - TAG |
| --- | --- | --- | --- | --- | --- | --- | --- | --- | --- | --- | --- | --- | --- | --- | --- | --- | --- | --- | --- | --- | --- | --- | --- | --- | --- | --- | --- | --- | --- | --- | --- |
|  | I0 | **Instrumentation** |  |  | 2007-06-25 | 2008-03-31 |  |  |  |  |  |  |  |  |  |  |  |  |  |  |  |  |  |  |  |  |  |  |  |  |  |
| CO02GI0120 |  | 02G Instrument JB's, Field Instr, Tray, Cable |  | 92d | 2007-06-25 | 2007-11-01 | PK020I131L, CO02GP0140 SS, CO02GP0140 FF+6d, EM020IC128 FS+30d, PK000I623L, PK000I616L, PK000I617L, PK000I611L, PK000I612L, PK000I621L, PK030I131L, PK030I611L, EM02GSY272 FS+30d, CO02GE0130 SS, EM020IC127 FS+40d, EM020IC124 FS+30d | 108d | 54d | EBWK 6 Day Egypt Holidays |  | 2006-07-29 | 120 | 0 | 0 | 02G | I0120 | -11 | 02 | CO | 1I1 | 02G | I0 | I | C | C |  |  |  |  |  |
| WO020I0100 |  | 020 Install Instruments & Test | WBS summary | 217d | 2007-06-25 | 2008-03-31 | EK000YA000 | 9d | 325d | EBWK 6 Day Egypt Holidays | Instrumentation and Control - Construction [70408.9 h] | 2006-07-29 | I00 | 0 | 0 | 02A | I0I00 |  | 02 | CO | I00 | 020 | I0 | I | WC | C | C5 |  |  |  |  |
| CO02CI0120 |  | 02C Instrument JB's, Field Instr, Tray, Cable |  | 105d | 2007-07-01 | 2007-11-21 | PK020I131L, CO02CP0140 SS, CO02CP0140 FF+6d, EM020IC128 FS+30d, PK000I623L, PK000I616L, PK000I617L, PK000I611L, PK000I612L, PK000I621L, PK030I131L, PK030I611L, EM02CSY272 FF+30d, CO02CE0130 SS, EM020IC127 FS+40d, EM020IC124 FS+30d | 88d | 47d | EBWK 6 Day Egypt Holidays |  | 2006-07-29 | 120 | 0 | 0 | 02C | I0120 | 8 | 02 | CO | 1I1 | 02C | I0 | I | C | C |  |  |  |  |  |
| CO02JI0120 |  | 02J Instrument JB's, Field Instr, Tray, Cable |  | 68d | 2007-08-01 | 2007-11-10 | PK020I131L, CO02JP0140 SS, CO02JP0140 FF+6d, EM020IC128 FS+30d, PK000I623L, PK000I616L, PK000I617L, PK000I611L, PK000I612L, PK000I621L, PK030I131L, PK030I611L, EM02JSY272 FS+30d, CO02JE0130 SS, EM020IC127 FS+40d, EM020IC124 FS+30d | 98d | 56d | EBWK 6 Day Egypt Holidays |  | 2006-07-29 | 120 | 0 | 0 | 02J | I0120 | 7 | 02 | CO | 1I1 | 02J | I0 | I | C | C |  |  |  |  |  |
| CO02YI0120 |  | 02Y Instrument JB's, Field Instr, Tray, Cable |  | 84d | 2007-08-19 | 2007-12-16 | PK020I131L, CO02YP0140 SS, CO02YP0140 FF+6d, EM020IC128 FS+30d, PK000I623L, PK000I616L, PK000I617L, PK000I611L, PK000I612L, PK000I621L, PK030I131L, PK030I611L, EM02YSY272 FS+30d, CO02YE0130 SS, EM020IC127 FS+40d, EM020IC124 FS+30d | -35d | 0d | EBWK 6 Day Egypt Holidays |  | 2006-07-29 | 120 | 48.9 | 17.4 | 02Y | I0120 | 12 | 02 | CO | 1I1 | 02Y | I0 | I | C | C | C3 | 72 | 84 | 96 |  |
| CO02FI0120 |  | 02F Instrument JB's, Field Instr, Tray, Cable |  | 51d | 2007-08-21 | 2007-11-10 | PK020I131L, CO02FP0140 SS, CO02FP0140 FF+6d, EM020IC128 FS+30d, PK000I623L, PK000I616L, PK000I617L, PK000I611L, PK000I612L, PK000I621L, PK030I131L, PK030I611L, EM02FSY272 FS+30d, CO02FE0130 SS, EM020IC127 FS+40d, EM020IC124 FS+30d | 104d | 60d | EBWK 6 Day Egypt Holidays |  | 2006-07-29 | 120 | 0 | 0 | 02F | I0120 | -21 | 02 | CO | 1I1 | 02F | I0 | I | C | C |  |  |  |  |  |
| CO02KI0120 |  | 02K Instrument JB's, Field Instr, Tray, Cable |  | 66d | 2007-08-29 | 2007-12-06 | PK020I131L, CO02KP0140 SS, CO02KP0140 FF+6d, EM020IC128 FS+30d, PK000I623L, PK000I616L, PK000I617L, PK000I611L, PK000I612L, PK000I621L, PK030I131L, PK030I611L, PK000I444L, EM02KSY272 FS+30d, CO02KE0130 SS, EM020IC127 FS+40d, EM020IC124 FS+30d | 77d | 29d | EBWK 6 Day Egypt Holidays |  | 2006-07-29 | 120 | 0.2 | 0 | 02K | I0120 | -2 | 02 | CO | 1I1 | 02K | I0 | I | C | C |  |  |  |  |  |
| CO02AI0120 |  | 02A Instrument JB's, Field Instr, Tray, Cable |  | 60d | 2007-09-06 | 2007-12-06 | PK020I131L, CO02AP0140 SS, CO02AP0140 FF+6d, EM020IC128 FS+30d, PK000I623L, PK000I616L, PK000I617L, PK000I611L, PK000I612L, PK000I621L, PK030I131L, PK030I611L, EM02ASY272 FS+30d, CO02AE0130 SS, EM020IC127 FS+40d, EM020IC124 FS+30d | 78d | 26d | EBWK 6 Day Egypt Holidays |  | 2006-07-29 | 120 | 0 | 0 | 02A | I0120 | 6 | 02 | CO | 1I1 | 02A | I0 | I | C | C |  |  |  |  |  |
| CO02MI0120 |  | 02M Instrument JB's, Field Instr, Tray, Cable |  | 47d | 2007-09-06 | 2007-11-21 | PK020I131L, CO02MP0140 SS, CO02MP0140 FF+6d, EM020IC128 FS+30d, PK000I623L, PK000I616L, PK000I617L, PK000I611L, PK000I612L, PK000I621L, PK030I131L, PK030I611L, EM02MSY272 FS+30d, CO02ME0130 SS, EM020IC127 FS+40d, EM020IC124 FS+30d | 95d | 44d | EBWK 6 Day Egypt Holidays |  | 2006-07-29 | 120 | 0 | 0 | 02M | I0120 | -4 | 02 | CO | 1I1 | 02M | I0 | I | C | C |  |  |  |  |  |
| CO02LI0120 |  | 02L Instrument JB's, Field Instr, Tray, Cable |  | 137d | 2007-09-10 | 2008-03-15 | PK020I131L, CO02LP0140 SS, CO02LP0140 FF+6d, EM020IC128 FS+30d, PK000I623L, PK000I616L, PK000I617L, PK000I611L, PK000I612L, PK000I621L, PK030I131L, PK030I611L, EM02LSY272 FS+30d, CO02LE0130 SS, EM020IC127 FS+40d, EM020IC124 FS+30d | -12d | 0d | EBWK 6 Day Egypt Holidays |  | 2006-07-29 | 120 | 3.8 | 2.7 |  |  | 10 | 02 | CO | 1I1 | 02L | I0 | I | C | C |  | 113 | 137 | 137 |  |
| CO02HI0120 |  | 02H Instrument JB's, Field Instr, Tray, Cable |  | 109d | 2007-09-22 | 2008-02-18 | PK020I131L, CO02HP0140 SS, CO02HP0140 FF+6d, EM020IC128 FS+30d, PK000I623L, PK000I616L, PK000I617L, PK000I611L, PK000I612L, PK000I621L, PK030I131L, PK030I611L, EM02HSY272 FS+30d, CO02HE0130 SS, EM020IC127 FS+40d, EM020IC124 FS+30d | 15d | 0d | EBWK 6 Day Egypt Holidays |  | 2006-07-29 | 120 | 3.9 | 2.6 | 02H | I0120 | -20 | 02 | CO | 1I1 | 02H | I0 | I | C | C |  | 99 | 109 | 114 |  |
| CO02BI0120 |  | 02B Instrument JB's, Field Instr, Tray, Cable |  | 7d | 2007-09-29 | 2007-10-20 | PK020I131L, CO02BP0140 SS, CO02BP0140 FF+6d, EM020IC128 FS+30d, PK000I623L, PK000I616L, PK000I617L, PK000I611L, PK000I612L, PK000I621L, PK030I131L, PK030I611L, EM02BSY272 FS+30d, CO02BE0130 SS, EM020IC127 FS+40d, EM020IC124 FS+30d | 136d | 63d | EBWK 6 Day Egypt Holidays |  | 2006-07-29 | 120 | 0 | 0 | 02B | I0120 | 26 | 02 | CO | 1I1 | 02B | I0 | I |  | C |  |  |  |  |  |
| CO02EI0120 |  | 02E Instrument JB's, Field Instr, Tray, Cable |  | 56d | 2007-10-08 | 2007-12-26 | PK020I131L, CO02EP0140 SS, CO02EP0140 FF+6d, EM020IC128 FS+30d, PK000I623L, PK000I616L, PK000I617L, PK000I611L, PK000I612L, PK000I621L, PK030I131L, PK030I611L, EM02ESY272 FS+30d, CO02EE0130 SS, EM020IC127 FS+40d, EM020IC124 FS+30d | 67d | 20d | EBWK 6 Day Egypt Holidays |  | 2006-07-29 | 120 | 0 | 0 | 02E | I0120 | 26 | 02 | CO | 1I1 | 02E | I0 | I | C | C |  |  |  |  |  |
| CO02BI0130 |  | 02B Install In Line Instruments |  | 2d | 2007-10-21 | 2007-10-22 | CO02BP0150 | 130d | 58d | EBWK 6 Day Egypt Holidays |  | 2006-07-29 | 130 | 0 | 0 | 02B | I0130 | 24.00208333 | 02 | CO | 1I2 | 02B | I0 | I |  | C |  |  |  |  |  |
| CO02PI0120 |  | 02P Instrument JB's, Field Instr, Tray, Cable |  | 13d | 2007-10-21 | 2007-11-04 | PK020I131L, CO02PP0140 SS, CO02PP0140 FF+6d, EM020IC128 FS+30d, PK000I623L, PK000I616L, PK000I617L, PK000I611L, PK000I612L, PK000I621L, PK030I131L, PK030I611L, EM02PSY272 FS+30d, CO02PE0110 SS, EM020IC127 FS+40d, EM020IC124 FS+30d | 121d | 57d | EBWK 6 Day Egypt Holidays |  | 2006-07-29 | 120 | 0 | 0 | 02P | I0120 | 12 | 02 | CO | 1I1 | 02P | I0 | I | C | C |  |  |  |  |  |
| CO02QI0120 |  | 02Q Instrument JB's, Field Instr, Tray, Cable |  | 13d | 2007-10-28 | 2007-11-11 | PK020I131L, CO02QP0140 SS, CO02QP0140 FF+6d, EM020IC128 FS+30d, PK000I623L, PK000I616L, PK000I617L, PK000I611L, PK000I612L, PK000I621L, PK030I131L, PK030I611L, EM02QSY272 FS+30d, CO02QE0110 SS, EM020IC127 FS+40d, EM020IC124 FS+30d | 115d | 52d | EBWK 6 Day Egypt Holidays |  | 2006-07-29 | 120 | 0 | 0 | 02Q | I0120 | 12 | 02 | CO | 1I1 | 02Q | I0 | I | C | C |  |  |  |  |  |
| CO02GI0130 |  | 02G Install In Line Instruments |  | 9d | 2007-11-01 | 2007-11-12 | CO02GP0150 | 105d | 51d | EBWK 6 Day Egypt Holidays |  | 2006-07-29 | 130 | 0 | 0 | 02G | I0130 | -11 | 02 | CO | 1I2 | 02G | I0 | I | C | C |  |  |  |  |  |
| CO02PI0130 |  | 02P Install In Line Instruments |  | 1d | 2007-11-05 | 2007-11-05 | CO02PP0150 | 118d | 54d | EBWK 6 Day Egypt Holidays |  | 2006-07-29 | 130 | 0 | 0 | 02P | I0130 | 12 | 02 | CO | 1I2 | 02P | I0 | I | C | C |  |  |  |  |  |
| CO02DI0120 |  | 02D Instrument JB's, Field Instr, Tray, Cable |  | 41d | 2007-11-10 | 2008-01-01 | PK020I131L, CO02DP0140 SS, CO02DP0140 FF+6d, EM020IC128 FS+30d, PK000I623L, PK000I616L, PK000I617L, PK000I611L, PK000I612L, PK000I621L, PK030I131L, PK030I611L, EM02DSY272 FS+30d, CO02DE0130 SS, EM020IC127 FS+40d, EM020IC124 FS+30d | 68d | 9d | EBWK 6 Day Egypt Holidays |  | 2006-07-29 | 120 | 0 | 0 | 02D | I0120 | -3 | 02 | CO | 1I1 | 02D | I0 | I | C | C |  |  |  |  |  |
| CO02FI0130 |  | 02F Install In Line Instruments |  | 5d | 2007-11-11 | 2007-11-15 | CO02FP0150 | 109d | 65d | EBWK 6 Day Egypt Holidays |  | 2006-07-29 | 130 | 0 | 0 | 02F | I0130 | -30 | 02 | CO | 1I2 | 02F | I0 | I | C | C |  |  |  |  |  |
| CO02JI0130 |  | 02J Install In Line Instruments |  | 7d | 2007-11-11 | 2007-11-18 | CO02JP0150 | 104d | 62d | EBWK 6 Day Egypt Holidays |  | 2006-07-29 | 130 | 0 | 0 | 02J | I0130 | 7 | 02 | CO | 1I2 | 02J | I0 | I | C | C |  |  |  |  |  |
| CO02QI0130 |  | 02Q Install In Line Instruments |  | 1d | 2007-11-12 | 2007-11-12 | CO02QP0150 | 112d | 49d | EBWK 6 Day Egypt Holidays |  | 2006-07-29 | 130 | 0 | 0 | 02Q | I0130 | 12 | 02 | CO | 1I2 | 02Q | I0 | I | C | C |  |  |  |  |  |
| CO02CI0130 |  | 02C Install In Line Instruments |  | 11d | 2007-11-22 | 2007-12-04 | CO02CP0150 | 83d | 42d | EBWK 6 Day Egypt Holidays |  | 2006-07-29 | 130 | 0 | 0 | 02C | I0130 | 0 | 02 | CO | 1I2 | 02C | I0 | I | C | C |  |  |  |  |  |
| CO02MI0130 |  | 02M Install In Line Instruments |  | 5d | 2007-11-22 | 2007-11-27 | CO02MP0150 | 99d | 48d | EBWK 6 Day Egypt Holidays |  | 2006-07-29 | 130 | 0 | 0 | 02M | I0130 | -4 | 02 | CO | 1I2 | 02M | I0 | I | C | C |  |  |  |  |  |
| CO02KI0130 |  | 02K Install In Line Instruments |  | 7d | 2007-12-06 | 2007-12-15 | CO02KP0150 | 83d | 35d | EBWK 6 Day Egypt Holidays |  | 2006-07-29 | 130 | 0 | 0 | 02K | I0130 | -37 | 02 | CO | 1I2 | 02K | I0 | I | C | C |  |  |  |  |  |
| CO02AI0130 |  | 02A Install In Line Instruments |  | 6d | 2007-12-08 | 2007-12-13 | CO02AP0150, PK000PSA8J, PK000PS00J | 84d | 32d | EBWK 6 Day Egypt Holidays |  | 2006-07-29 | 130 | 0 | 0 | 02A | I0130 | 0 | 02 | CO | 1I2 | 02A | I0 | I | C | C |  |  |  |  |  |
| CO02YI0130 |  | 02Y Install In Line Instruments |  | 24d | 2007-12-10 | 2008-01-12 | CO02YP0150 | 65d | 12d | EBWK 6 Day Egypt Holidays |  | 2006-07-29 | 130 | 0 | 0 | 02Y | I0130 | 12 | 02 | CO | 1I2 | 02Y | I0 | I | C | C |  |  |  |  |  |
| CO02NI0120 |  | 02N Instrument JB's, Field Instr, Tray, Cable |  | 9d | 2007-12-15 | 2007-12-30 | PK020I131L, CO02NP0140 SS, CO02NP0140 FF+6d, EM020IC128 FS+30d, PK000I623L, PK000I616L, PK000I617L, PK000I611L, PK000I612L, PK000I621L, PK030I131L, PK030I611L, EM02NSY272 FS+30d, CO02NE0130 SS, EM020IC127 FS+40d, EM020IC124 FS+30d | 80d | 13d | EBWK 6 Day Egypt Holidays |  | 2006-07-29 | 120 | 0 | 0 | 02N | I0120 | -4 | 02 | CO | 1I1 | 02N | I0 | I | C | C |  |  |  |  |  |
| CO02EI0130 |  | 02E Install In Line Instruments |  | 6d | 2007-12-27 | 2008-01-02 | CO02EP0150 | 73d | 26d | EBWK 6 Day Egypt Holidays |  | 2006-07-29 | 130 | 0 | 0 | 02E | I0130 | 24 | 02 | CO | 1I2 | 02E | I0 | I | C | C |  |  |  |  |  |
| CO02NI0130 |  | 02N Install In Line Instruments |  | 1d | 2007-12-31 | 2007-12-31 | CO02NP0150 | 75d | 9d | EBWK 6 Day Egypt Holidays |  | 2006-07-29 | 130 | 0 | 0 | 02N | I0130 | -4 | 02 | CO | 1I2 | 02N | I0 | I | C | C |  |  |  |  |  |
| CO02DI0130 |  | 02D Install In Line Instruments |  | 4d | 2008-01-02 | 2008-01-06 | CO02DP0150 | 70d | 12d | EBWK 6 Day Egypt Holidays |  | 2006-07-29 | 130 | 0 | 0 | 02D | I0130 | -3 | 02 | CO | 1I2 | 02D | I0 | I | C | C |  |  |  |  |  |
| CO02GI0140 |  | 02G Continuity Testing |  | 9d | 2008-01-06 | 2008-01-15 | CO02GI0120 SS, CO02GI0120 FF+6d, CO01GI0120 | 54d | 0d | EBWK 6 Day Egypt Holidays |  | 2006-07-29 | 140 | 0 | 0 | 02G | I0140 | -11 | 02 | CO | 1I3 | 02G | I0 | I | C | C |  |  |  |  |  |
| CO02YI0140 |  | 02Y Continuity Testing |  | 24d | 2008-01-06 | 2008-02-02 | CO02YI0120 SS, CO02YI0120 FF+6d, CO01GI0120 | 53d | 0d | EBWK 6 Day Egypt Holidays |  | 2006-07-29 | 140 | 0 | 0 | 02Y | I0140 | 12 | 02 | CO | 1I3 | 02Y | I0 | I | C | C |  |  |  |  |  |
| CO02AI0140 |  | 02A Continuity Testing |  | 6d | 2008-01-13 | 2008-01-19 | CO02AI0120 SS, CO02AI0120 FF+6d, CO01GI0120 FS+6d | 52d | 0d | EBWK 6 Day Egypt Holidays |  | 2006-07-29 | 140 | 0 | 0 | 02A | I0140 | 12 | 02 | CO | 1I3 | 02A | I0 | I | C | C |  |  |  |  |  |
| CO02BI0140 |  | 02B Continuity Testing |  | 2d | 2008-01-13 | 2008-01-14 | CO02BI0120 SS, CO02BI0120 FF+6d, CO01GI0120 FS+6d | 73d | 0d | EBWK 6 Day Egypt Holidays |  | 2006-07-29 | 140 | 0 | 0 | 02B | I0140 | 12 | 02 | CO | 1I3 | 02B | I0 | I |  | C |  |  |  |  |  |
| CO02KI0140 |  | 02K Continuity Testing |  | 7d | 2008-01-14 | 2008-01-21 | CO02KI0120 SS, CO02KI0120 FF+6d, CO01GI0120 FS+7d | 48d | 0d | EBWK 6 Day Egypt Holidays |  | 2006-07-29 | 140 | 0.2 | 0 | 02K | I0140 | 12 | 02 | CO | 1I3 | 02K | I0 | I | C | C |  |  |  |  |  |
| CO02DI0140 |  | 02D Continuity Testing |  | 4d | 2008-01-15 | 2008-01-19 | CO02DI0120 SS, CO02DI0120 FF+6d, CO01GI0120 FS+8d | 59d | 0d | EBWK 6 Day Egypt Holidays |  | 2006-07-29 | 140 | 0 | 0 | 02D | I0140 | 12 | 02 | CO | 1I3 | 02D | I0 | I | C | C |  |  |  |  |  |
| CO02CI0140 |  | 02C Continuity Testing |  | 11d | 2008-01-16 | 2008-01-28 | CO02CI0120 SS, CO02CI0120 FF+6d, CO01GI0120 FS+9d | 41d | 0d | EBWK 6 Day Egypt Holidays |  | 2006-07-29 | 140 | 0 | 0 | 02C | I0140 | 12 | 02 | CO | 1I3 | 02C | I0 | I | C | C |  |  |  |  |  |
| CO02EI0140 |  | 02E Continuity Testing |  | 6d | 2008-01-20 | 2008-01-26 | CO02EI0120 SS, CO02EI0120 FF+6d, CO01GI0120 FS+12d | 47d | 0d | EBWK 6 Day Egypt Holidays |  | 2006-07-29 | 140 | 0 | 0 | 02E | I0140 | 12 | 02 | CO | 1I3 | 02E | I0 | I | C | C |  |  |  |  |  |
| CO02JI0140 |  | 02J Continuity Testing |  | 7d | 2008-01-20 | 2008-01-27 | CO02JI0120 SS, CO02JI0120 FF+6d, CO01GI0120 FS+12d | 42d | 0d | EBWK 6 Day Egypt Holidays |  | 2006-07-29 | 140 | 0 | 0 | 02J | I0140 | 12 | 02 | CO | 1I3 | 02J | I0 | I | C | C |  |  |  |  |  |
| CO02MI0140 |  | 02M Continuity Testing |  | 5d | 2008-01-20 | 2008-01-24 | CO02MI0120 SS, CO02MI0120 FF+6d, CO01GI0120 FS+12d | 51d | 0d | EBWK 6 Day Egypt Holidays |  | 2006-07-29 | 140 | 0 | 0 | 02M | I0140 | 12 | 02 | CO | 1I3 | 02M | I0 | I | C | C |  |  |  |  |  |
| CO02NI0140 |  | 02N Continuity Testing |  | 1d | 2008-01-21 | 2008-01-21 | CO02NI0120 SS, CO02NI0120 FF+6d, CO01GI0120 FS+13d | 67d | 0d | EBWK 6 Day Egypt Holidays |  | 2006-07-29 | 140 | 0 | 0 | 02N | I0140 | 12 | 02 | CO | 1I3 | 02N | I0 | I | C | C |  |  |  |  |  |
| CO02PI0140 |  | 02P Continuity Testing |  | 1d | 2008-01-22 | 2008-01-22 | CO02PI0120 SS, CO02PI0120 FF+6d, CO01GI0120 FS+14d | 64d | 0d | EBWK 6 Day Egypt Holidays |  | 2006-07-29 | 140 | 0 | 0 | 02P | I0140 | 12 | 02 | CO | 1I3 | 02P | I0 | I | C | C |  |  |  |  |  |
| CO02QI0140 |  | 02Q Continuity Testing |  | 1d | 2008-01-23 | 2008-01-23 | CO02QI0120 SS, CO02QI0120 FF+6d, CO01GI0120 FS+15d | 63d | 0d | EBWK 6 Day Egypt Holidays |  | 2006-07-29 | 140 | 0 | 0 | 02Q | I0140 | 12 | 02 | CO | 1I3 | 02Q | I0 | I | C | C |  |  |  |  |  |
| CO02FI0140 |  | 02F Continuity Testing |  | 5d | 2008-01-27 | 2008-01-31 | CO02FI0120 SS, CO02FI0120 FF+6d, CO01GI0120 FS+18d | 44d | 0d | EBWK 6 Day Egypt Holidays |  | 2006-07-29 | 140 | 0 | 0 | 02F | I0140 | 12 | 02 | CO | 1I3 | 02F | I0 | I | C | C |  |  |  |  |  |
| CO02HI0140 |  | 02H Continuity Testing |  | 11d | 2008-02-13 | 2008-02-25 | CO02HI0120 SS, CO02HI0120 FF+6d, CO01GI0120 | 15d | 0d | EBWK 6 Day Egypt Holidays |  | 2006-07-29 | 140 | 3.9 | 0 | 02H | I0140 | -20 | 02 | CO | 1I3 | 02H | I0 | I | C | C |  | 10 | 11 | 15 |  |
| CO02HI0130 |  | 02H Install In Line Instruments |  | 11d | 2008-02-19 | 2008-03-02 | CO02HP0150 | 10d | 0d | EBWK 6 Day Egypt Holidays |  | 2006-07-29 | 130 | 1.3 | 0 | 02H | I0130 | -20 | 02 | CO | 1I2 | 02H | I0 | I | C | C | C5 | 10 | 11 | 15 |  |
| CO02HI0145 |  | 02H Contingency (101-B) |  | 24d | 2008-02-26 | 2008-03-24 | CO02HI0140 | 15d | 0d | EBWK 6 Day Egypt Holidays |  | 2006-07-29 |  | 3.1 | 0 |  |  | -20 | 02 | CO | 1M1 | 02H | I0 | I | C | C |  | 20 | 24 | 29 | 101B |
| CO02LI0140 |  | 02L Continuity Testing |  | 14d | 2008-03-06 | 2008-03-22 | CO02LI0120 SS, CO02LI0120 FF+6d, CO01GI0120 | -12d | 0d | EBWK 6 Day Egypt Holidays |  | 2006-07-29 | 140 | 3.8 | 0 |  |  | 10 | 02 | CO | 1I3 | 02L | I0 | I | C | C |  | 12 | 14 | 16 |  |
| CO02LI0130 |  | 02L Install In Line Instruments |  | 14d | 2008-03-16 | 2008-03-31 | CO02LP0150 | -15d | 0d | EBWK 6 Day Egypt Holidays |  | 2006-07-29 | 130 | 1 | 0 |  |  | 10 | 02 | CO | 1I2 | 02L | I0 | I | C | C |  |  |  |  |  |

| ID | WBS | Activity | Type | Duration | Start | Finish | Predecessors | Complete | Remaining | Planned start | Planned finish | Total float | Free float | Expected finish | Calendar | Resources | zData Date | Sequence | PCA Criticality Index | PCA Duration Sensitivity | User Defined Field 1 | User Definer Field 2 | user_number1 | EB02 - UNIT | EB01 - RESP | EB06 - WORK OP | EB03 - AREA | EB05 - DISCIPLINE | EB04 - CLASS | EB00 - EPC | EB11 - FLAG | EB12 - TEMP | Optimistic Duration | Most Likely Duration | Pessimistic Duration |
| --- | --- | --- | --- | --- | --- | --- | --- | --- | --- | --- | --- | --- | --- | --- | --- | --- | --- | --- | --- | --- | --- | --- | --- | --- | --- | --- | --- | --- | --- | --- | --- | --- | --- | --- | --- |
|  | V1 | **Painting** |  |  | 2006-10-11 | 2008-03-15 |  |  |  |  |  |  |  |  |  |  |  |  |  |  |  |  |  |  |  |  |  |  |  |  |  |  |  |  |  |
| CO02AV1110 |  | 02A Paint Fabricated Pipe Spools |  | 19d | 2006-10-11 A | 2007-07-02 | CK02AU4110 SS+18d, CK02AU4110 FF+12d, PO000V1005, CK02AP0110 FF+6d | 37% | 12d | 2006-10-28 | 2006-11-18 | 172d | 94d |  | EBWK 6 Day Egypt Holidays |  | 2006-07-29 | 110 | 0 | 0 | 02A | V1110 | -18 | 02 | CO | 1V1 | 02A | V1 | V | C |  |  |  |  |  |
| CO02CV1110 |  | 02C Paint Fabricated Pipe Spools |  | 34d | 2006-10-11 A | 2007-03-29 | CK02CU4110 SS+18d, CK02CU4110 FF+12d, PO000V1005, CK02CP0110 FF+6d |  | 34d | 2006-10-28 | 2006-12-05 | 245d | 162d |  | EBWK 6 Day Egypt Holidays |  | 2006-07-29 | 110 | 0 | 0 | 02C | V1110 | -24 | 02 | CO | 1V1 | 02C | V1 | V | C |  |  |  |  |  |
| CO02DV1110 |  | 02D Paint Fabricated Pipe Spools |  | 13d | 2006-10-11 A | 2007-06-06 | CK02DU4110 SS+18d, CK02DU4110 FF+12d, PO000V1005, CK02DP0110 FF+6d |  | 13d | 2006-10-28 | 2006-11-11 | 177d | 115d |  | EBWK 6 Day Egypt Holidays |  | 2006-07-29 | 110 | 0 | 0 | 02D | V1110 | -22 | 02 | CO | 1V1 | 02D | V1 | V | C |  |  |  |  |  |
| CO02EV1110 |  | 02E Paint Fabricated Pipe Spools |  | 18d | 2006-10-11 A | 2007-04-03 | CK02EU4110 SS+18d, CK02EU4110 FF+12d, PO000V1005, CK02EP0110 FF+6d |  | 18d | 2007-01-14 | 2007-02-03 | 250d | 183d |  | EBWK 6 Day Egypt Holidays |  | 2006-07-29 | 110 | 0 | 0 | 02E | V1110 | -29 | 02 | CO | 1V1 | 02E | V1 | V | C |  |  |  |  |  |
| CO02HV1110 |  | 02H Paint Fabricated Pipe Spools |  | 35d | 2006-10-11 A | 2007-07-05 | CK02HU4110 SS+18d, CK02HU4110 FF+12d, PO000V1005, CK02HP0110 FF+6d |  | 35d | 2006-12-11 | 2007-01-27 | 54d | 44d |  | EBWK 6 Day Egypt Holidays |  | 2006-07-29 | 110 | 0 | 0 | 02H | V1110 | 0 | 02 | CO | 1V1 | 02H | V1 | V | C |  |  |  |  |  |
| CO02LV1110 |  | 02L Paint Fabricated Pipe Spools |  | 44d | 2006-10-11 A | 2007-06-28 | CK02LU4110 SS+18d, CK02LU4110 FF+12d, PO000V1005, CK02LP0110 FF+6d |  | 44d | 2006-11-27 | 2007-01-23 | 162d | 177d |  | EBWK 6 Day Egypt Holidays |  | 2006-07-29 | 110 | 0 | 0 |  |  | 0 | 02 | CO | 1V1 | 02L | V1 | V | C |  |  |  |  |  |
| WO020V1100 |  | 020 Paint | WBS summary | 403d | 2006-10-11 A | 2008-03-15 | EK000YA000 | 23% | 311d | 2006-10-28 | 2008-03-15 | 23d | 339d |  | EBWK 6 Day Egypt Holidays | Insulation - Construction [186249 h] | 2006-07-29 | V10 | 0 | 0 | 02A | V1V10 |  | 02 | CO | V10 | 020 | V1 | V | C | WC |  |  |  |  |
| CO02KV1110 |  | 02K Paint Fabricated Pipe Spools |  | 21d | 2006-10-25 A | 2007-06-03 | CK02KU4110 SS+18d, CK02KU4110 FF+12d, PO000V1005, CK02KP0110 FF+6d |  | 21d | 2007-01-10 | 2007-02-03 | 181d | 104d |  | EBWK 6 Day Egypt Holidays |  | 2006-07-29 | 110 | 0 | 0 | 02K | V1110 | 0 | 02 | CO | 1V1 | 02K | V1 | V | C |  |  |  |  |  |
| CO02BV1110 |  | 02B Paint Fabricated Pipe Spools |  | 12d | 2006-11-05 A | 2007-06-30 | CK02BU4110 SS+18d, PO000V1005, CK02BU4110 FF+12d, CK02BP0110 FF+6d | 50% | 6d | 2006-11-11 | 2006-11-23 | 175d | 55d |  | EBWK 6 Day Egypt Holidays |  | 2006-07-29 | 110 | 0 | 0 | 02B | V1110 | -20 | 02 | CO | 1V1 | 02B | V1 | V | C |  |  |  |  |  |
| CO02JV1110 |  | 02J Paint Fabricated Pipe Spools |  | 22d | 2006-11-06 A | 2007-04-26 | CK02JU4110 SS+18d, CK02JU4110 FF+12d, PO000V1005, CK02JP0110 FF+6d | 100% | 0d | 2006-12-06 | 2007-01-07 | 164d | 66d |  | EBWK 6 Day Egypt Holidays |  | 2006-07-29 | 110 | 0 | 0 | 02J | V1110 | 0 | 02 | CO | 1V1 | 02J | V1 | V | C |  |  |  |  |  |
| CO02MV1110 |  | 02M Paint Fabricated Pipe Spools |  | 15d | 2006-11-06 A | 2007-05-14 | CK02MU4110 SS+18d, CK02MU4110 FF+12d, PO000V1005, CK02MP0110 FF+6d | 20% | 12d | 2006-12-02 | 2006-12-18 | 215d | 123d |  | EBWK 6 Day Egypt Holidays |  | 2006-07-29 | 110 | 0 | 0 | 02M | V1110 | 0 | 02 | CO | 1V1 | 02M | V1 | V | C |  |  |  |  |  |
| CO02UV1110 |  | 02U Paint Fabricated Pipe Spools (CW & Misc Headers) |  | 6d | 2006-11-06 A | 2006-11-30 A | CK02UU4110 FF+6d, CK02UU4110 SS+10d | 100% |  | 2006-11-11 | 2006-11-16 |  |  |  | EBWK 6 Day Egypt Holidays |  | 2006-07-29 | 110 | 0 | 0 | 01D | V1110 | 12 | 02 | CO | 1V1 | 02Y | V1 | V | C |  | 2Y |  |  |  |
| CO02FV1110 |  | 02F Paint Fabricated Pipe Spools |  | 16d | 2006-11-12 A | 2007-05-27 | CK02FU4110 SS+18d, CK02FU4110 FF+12d, PO000V1005, CK02FP0110 FF+6d |  | 16d | 2007-01-16 | 2007-02-03 | 204d | 102d |  | EBWK 6 Day Egypt Holidays |  | 2006-07-29 | 110 | 0 | 0 | 02F | V1110 | 0 | 02 | CO | 1V1 | 02F | V1 | V | C |  |  |  |  |  |
| CO02GV1110 |  | 02G Paint Fabricated Pipe Spools |  | 30d | 2006-11-12 A | 2007-04-21 | CK02GU4110 SS+18d, CK02GU4110 FF+12d, PO000V1005, CK02GP0110 FF+6d |  | 30d | 2007-01-06 | 2007-02-08 | 230d | 125d |  | EBWK 6 Day Egypt Holidays |  | 2006-07-29 | 110 | 0 | 0 | 02G | V1110 | 0 | 02 | CO | 1V1 | 02G | V1 | V | C |  |  |  |  |  |
| CO02NV1110 |  | 02N Paint Fabricated Pipe Spools |  | 3d | 2006-11-18 A | 2007-05-03 | PO000V1005, CK02NP0110 SS+6d, CK02NP0110 FF+6d |  | 3d | 2007-01-06 | 2007-01-08 | 216d | 160d |  | EBWK 6 Day Egypt Holidays |  | 2006-07-29 | 110 | 0 | 0 | 02N | V1110 | 0 | 02 | CO | 1V1 | 02N | V1 | V | C |  |  |  |  |  |
| CO02YV1110 |  | 02Y Paint Fabricated Pipe Spools |  | 48d | 2006-11-18 A | 2007-03-21 | PO000V1005, CK02YP0110 SS+18d, CK02YP0110 FF+18d | 73% | 13d | 2006-11-26 | 2007-01-27 | 131d | 0d | 2007-01-27 | EBWK 6 Day Egypt Holidays |  | 2006-07-29 | 110 | 0 | 0 | 02Y | V1110 | 4.00208333 | 02 | CO | 1V1 | 02Y | V1 | V | C |  | 2Y |  |  |  |
| CO02PV1110 |  | 02P Paint Fabricated Pipe Spools |  | 4d | 2006-11-21 A | 2007-05-28 | PO000V1005, CK02PP0110 SS+6d, CK02PP0110 FF+6d |  | 4d | 2007-01-06 | 2007-01-09 | 199d | 96d |  | EBWK 6 Day Egypt Holidays |  | 2006-07-29 | 110 | 0 | 0 | 02P | V1110 | -2 | 02 | CO | 1V1 | 02P | V1 | V | C |  |  |  |  |  |
| CO02QV1110 |  | 02Q Paint Fabricated Pipe Spools |  | 4d | 2006-12-05 A | 2007-05-20 | PO000V1005, CK02QP0110 SS+6d, CK02QP0110 FF+6d |  | 4d | 2007-02-12 | 2007-02-17 | 210d | 109d |  | EBWK 6 Day Egypt Holidays |  | 2006-07-29 | 110 | 0 | 0 | 02Q | V1110 | 0 | 02 | CO | 1V1 | 02Q | V1 | V | C |  |  |  |  |  |
| CO02BV1130 |  | 02B Paint Touch-up - Equipment |  | 6d | 2007-02-24 | 2007-03-03 | PO000V1005, CO02BM0110 |  |  |  |  | 300d | 96d |  | EBWK 6 Day Egypt Holidays |  | 2006-07-29 | 130 | 0 | 0 | 02B | V1130 | -12 | 02 | CO | 1V3 | 02B | V1 | V | C |  |  |  |  |  |
| CO02KV1130 |  | 02K Paint Touch-up - Equipment |  | 21d | 2007-04-22 | 2007-05-15 | CO02KM0150 FF+12d, CO02KM0130, PO000V1005 |  |  |  |  | 236d | 44d |  | EBWK 6 Day Egypt Holidays |  | 2006-07-29 | 130 | 0 | 0 | 02K | V1130 | -37 | 02 | CO | 1V3 | 02K | V1 | V | C |  |  |  |  |  |
| CO02AV1130 |  | 02A Paint Touch-up - Equipment |  | 19d | 2007-04-29 | 2007-05-20 | CO02AM0150 FF+12d, PO000V1005 |  |  |  |  | 232d | 51d |  | EBWK 6 Day Egypt Holidays |  | 2006-07-29 | 130 | 0 | 0 | 02A | V1130 | 0 | 02 | CO | 1V3 | 02A | V1 | V | C |  |  |  |  |  |
| CO02DV1130 |  | 02D Paint Touch-up - Equipment |  | 13d | 2007-05-15 | 2007-05-29 | CO02DM0150 FF+12d, PO000V1005 |  |  |  |  | 224d | 37d |  | EBWK 6 Day Egypt Holidays |  | 2006-07-29 | 130 | 0 | 0 | 02D | V1130 | -3 | 02 | CO | 1V3 | 02D | V1 | V | C |  |  |  |  |  |
| CO02FV1130 |  | 02F Paint Touch-up - Equipment |  | 16d | 2007-06-09 | 2007-06-26 | CO02FM0150 FF+12d, PO000V1005 |  |  |  |  | 200d | 0d |  | EBWK 6 Day Egypt Holidays |  | 2006-07-29 | 130 | 0 | 0 | 02F | V1130 | -30 | 02 | CO | 1V3 | 02F | V1 | V | C |  |  |  |  |  |
| CO02CV1130 |  | 02C Paint Touch-up - Equipment |  | 34d | 2007-06-13 | 2007-07-22 | CO02CM0150 FF+12d, CO02CM0130, CO02CM0140, PO000V1005 |  |  |  |  | 190d | 0d |  | EBWK 6 Day Egypt Holidays |  | 2006-07-29 | 130 | 0 | 0 | 02C | V1130 | 0 | 02 | CO | 1V3 | 02C | V1 | V | C |  |  |  |  |  |
| CO02MV1130 |  | 02M Paint Touch-up - Equipment |  | 15d | 2007-07-12 | 2007-07-29 | CO02MM0130, PO000V1005, CO02MM0140 |  |  |  |  | 172d | 0d |  | EBWK 6 Day Egypt Holidays |  | 2006-07-29 | 130 | 0 | 0 | 02M | V1130 | -4 | 02 | CO | 1V3 | 02M | V1 | V | C |  |  |  |  |  |
| CO02EV1130 |  | 02E Paint Touch-up - Equipment |  | 18d | 2007-08-02 | 2007-08-22 | PO000V1005, CO02EM0110 FF+12d |  |  |  |  | 151d | 0d |  | EBWK 6 Day Egypt Holidays |  | 2006-07-29 | 130 | 0 | 0 | 02E | V1130 | 24 | 02 | CO | 1V3 | 02E | V1 | V | C |  |  |  |  |  |
| CO02LV1130 |  | 02L Paint Touch-up - Equipment |  | 44d | 2007-08-16 | 2007-10-28 | CO02LM0120 SS+24d, CO02LM0150 FF+12d, CO02LM0130, CO02LM0140, PO000V1005 |  |  |  |  | 69d | 0d |  | EBWK 6 Day Egypt Holidays |  | 2006-07-29 | 130 | 0 | 0 |  |  | 10 | 02 | CO | 1V3 | 02L | V1 | V | C |  |  |  |  |  |
| CO02NV1130 |  | 02N Paint Touch-up - Equipment |  | 6d | 2007-08-22 | 2007-08-28 | PO000V1005, CO02NS0120, CO02NM0110 |  |  |  |  | 146d | 0d |  | EBWK 6 Day Egypt Holidays |  | 2006-07-29 | 130 | 0 | 0 | 02N | V1130 | -4 | 02 | CO | 1V3 | 02N | V1 | V | C |  |  |  |  |  |
| CO02YV1120 |  | 02Y Paint Touch-up - Piping |  | 72d | 2007-08-26 | 2007-12-09 | CO02YP0140 FF+6d |  |  |  |  | 101d | 0d |  | EBWK 6 Day Egypt Holidays |  | 2006-07-29 | 120 | 0 | 0 | 02Y | V1120 | 12 | 02 | CO | 1V2 | 02Y | V1 | V | C |  |  |  |  |  |
| CO02YV1130 |  | 02Y Paint Touch-up - Pipe Rack |  | 72d | 2007-08-26 | 2007-12-09 | PO000V1005, CO02YV1120 SS |  |  |  |  | 101d | 42d |  | EBWK 6 Day Egypt Holidays |  | 2006-07-29 | 130 | 0 | 0 | 02Y | V1130 | 12 | 02 | CO | 1V3 | 02Y | V1 | V | C |  |  |  |  |  |
| CO02GV1130 |  | 02G Paint Touch-up - Equipment |  | 30d | 2007-08-29 | 2007-10-25 | CO02GM0150 FF+12d, CO02GM0130, CO02GM0140 FF+24d, PO000V1005 |  |  |  |  | 116d | 0d |  | EBWK 6 Day Egypt Holidays |  | 2006-07-29 | 130 | 0 | 0 | 02G | V1130 | -0.00208333 | 02 | CO | 1V3 | 02G | V1 | V | C |  |  |  |  |  |
| CO02GV1120 |  | 02G Paint Touch-up - Piping |  | 30d | 2007-09-05 | 2007-11-01 | CO02GP0140 FF+6d |  |  |  |  | 134d | 60d |  | EBWK 6 Day Egypt Holidays |  | 2006-07-29 | 120 | 0 | 0 | 02G | V1120 | -11 | 02 | CO | 1V2 | 02G | V1 | V | C |  |  |  |  |  |
| CO02BV1120 |  | 02B Paint Touch-up - Piping |  | 6d | 2007-10-01 | 2007-10-20 | CO02BP0140 FF+6d |  |  |  |  | 144d | 69d |  | EBWK 6 Day Egypt Holidays |  | 2006-07-29 | 120 | 0 | 0 | 02B | V1120 | 24.00208333 | 02 | CO | 1V2 | 02B | V1 | V | C |  |  |  |  |  |
| CO02CV1120 |  | 02C Paint Touch-up - Piping |  | 34d | 2007-10-01 | 2007-11-21 | CO02CP0140 FF+6d |  |  |  |  | 116d | 53d |  | EBWK 6 Day Egypt Holidays |  | 2006-07-29 | 120 | 0 | 0 | 02C | V1120 | 0 | 02 | CO | 1V2 | 02C | V1 | V | C |  |  |  |  |  |
| CO02JV1120 |  | 02J Paint Touch-up - Piping |  | 22d | 2007-10-06 | 2007-11-10 | CO02JP0140 FF+6d |  |  |  |  | 102d | 0d |  | EBWK 6 Day Egypt Holidays |  | 2006-07-29 | 120 | 0 | 0 | 02J | V1120 | 7 | 02 | CO | 1V2 | 02J | V1 | V | C |  |  |  |  |  |
| CO02JV1130 |  | 02J Paint Touch-up - Equipment |  | 22d | 2007-10-06 | 2007-11-10 | CO02JM0130, CO02JM0140, PO000V1005, CO02JV1120 SS |  |  |  |  | 102d | 0d |  | EBWK 6 Day Egypt Holidays |  | 2006-07-29 | 130 | 0 | 0 | 02J | V1130 | 7 | 02 | CO | 1V3 | 02J | V1 | V | C |  |  |  |  |  |
| CO02HV1130 |  | 02H Paint Touch-up - Equipment |  | 35d | 2007-10-10 | 2007-11-27 | CO02HM0120 SS+24d, CO02HM0130, CO02HM0140, PO000V1005 |  |  |  |  | 52d | 0d |  | EBWK 6 Day Egypt Holidays |  | 2006-07-29 | 130 | 4 | 0 | 02H | V1130 | -29 | 02 | CO | 1V3 | 02H | V1 | V | C |  |  | 30 | 35 | 40 |
| CO02FV1120 |  | 02F Paint Touch-up - Piping |  | 16d | 2007-10-23 | 2007-11-10 | CO02FP0140 FF+6d |  |  |  |  | 126d | 66d |  | EBWK 6 Day Egypt Holidays |  | 2006-07-29 | 120 | 0 | 0 | 02F | V1120 | -30 | 02 | CO | 1V2 | 02F | V1 | V | C |  |  |  |  |  |
| CO02PV1130 |  | 02P Paint Touch-up - Equipment |  | 4d | 2007-10-29 | 2007-11-01 | PO000V1005, CO02PM0110, CO02PP0140 |  |  |  |  | 103d | 0d |  | EBWK 6 Day Egypt Holidays |  | 2006-07-29 | 130 | 0 | 0 | 02P | V1130 | 12 | 02 | CO | 1V3 | 02P | V1 | V | C |  |  |  |  |  |
| CO02PV1120 |  | 02P Paint Touch-up - Piping |  | 4d | 2007-10-31 | 2007-11-04 | CO02PP0140 FF+6d |  |  |  |  | 125d | 18d |  | EBWK 6 Day Egypt Holidays |  | 2006-07-29 | 120 | 0 | 0 | 02P | V1120 | 12 | 02 | CO | 1V2 | 02P | V1 | V | C |  |  |  |  |  |
| CO02MV1120 |  | 02M Paint Touch-up - Piping |  | 15d | 2007-11-05 | 2007-11-21 | CO02MP0140 FF+6d |  |  |  |  | 116d | 50d |  | EBWK 6 Day Egypt Holidays |  | 2006-07-29 | 120 | 0 | 0 | 02M | V1120 | -4 | 02 | CO | 1V2 | 02M | V1 | V | C |  |  |  |  |  |
| CO02QV1120 |  | 02Q Paint Touch-up - Piping |  | 4d | 2007-11-05 | 2007-11-08 | CO02QP0140 |  |  |  |  | 121d | 20d |  | EBWK 6 Day Egypt Holidays |  | 2006-07-29 | 120 | 0 | 0 | 02Q | V1120 | 12 | 02 | CO | 1V2 | 02Q | V1 | V | C |  |  |  |  |  |
| CO02QV1130 |  | 02Q Paint Touch-up - Equipment |  | 4d | 2007-11-05 | 2007-11-08 | PO000V1005, CO02QP0140 |  |  |  |  | 121d | 0d |  | EBWK 6 Day Egypt Holidays |  | 2006-07-29 | 130 | 0 | 0 | 02Q | V1130 | 12 | 02 | CO | 1V3 | 02Q | V1 | V | C |  |  |  |  |  |
| CO02KV1120 |  | 02K Paint Touch-up - Piping |  | 21d | 2007-11-12 | 2007-12-06 | CO02KP0140 FF+6d |  |  |  |  | 104d | 35d |  | EBWK 6 Day Egypt Holidays |  | 2006-07-29 | 120 | 0 | 0 | 02K | V1120 | -37 | 02 | CO | 1V2 | 02K | V1 | V | C |  |  |  |  |  |
| CO02AV1120 |  | 02A Paint Touch-up - Piping |  | 19d | 2007-11-15 | 2007-12-06 | CO02AP0140 FF+6d |  |  |  |  | 103d | 32d |  | EBWK 6 Day Egypt Holidays |  | 2006-07-29 | 120 | 0 | 0 | 02A | V1120 | 0 | 02 | CO | 1V2 | 02A | V1 | V | C |  |  |  |  |  |
| CO02EV1120 |  | 02E Paint Touch-up - Piping |  | 18d | 2007-12-01 | 2007-12-26 | CO02EP0140 FF+6d |  |  |  |  | 91d | 26d |  | EBWK 6 Day Egypt Holidays |  | 2006-07-29 | 120 | 0 | 0 | 02E | V1120 | 24 | 02 | CO | 1V2 | 02E | V1 | V | C |  |  |  |  |  |
| CO02DV1120 |  | 02D Paint Touch-up - Piping |  | 13d | 2007-12-12 | 2008-01-01 | CO02DP0140 FF+6d |  |  |  |  | 86d | 15d |  | EBWK 6 Day Egypt Holidays |  | 2006-07-29 | 120 | 0 | 0 | 02D | V1120 | -3 | 02 | CO | 1V2 | 02D | V1 | V | C |  |  |  |  |  |
| CO02NV1120 |  | 02N Paint Touch-up - Piping |  | 6d | 2007-12-18 | 2007-12-30 | CO02NP0140 FF+6d |  |  |  |  | 88d | 19d |  | EBWK 6 Day Egypt Holidays |  | 2006-07-29 | 120 | 0 | 0 | 02N | V1120 | -4 | 02 | CO | 1V2 | 02N | V1 | V | C |  |  |  |  |  |
| CO02HV1120 |  | 02H Paint Touch-up - Piping |  | 35d | 2008-01-09 | 2008-02-18 | CO02HP0140 FF+6d, CO02HV2110 |  |  |  |  | 45d | 30d |  | EBWK 6 Day Egypt Holidays |  | 2006-07-29 | 120 | 4 | 5.3 | 02H | V1120 | -29 | 02 | CO | 1V2 | 02H | V1 | V | C |  |  | 30 | 35 | 40 |
| CO02LV1120 |  | 02L Paint Touch-up - Piping |  | 44d | 2008-01-24 | 2008-03-15 | CO02LP0140 FF+6d, CO02LV2110 |  |  |  |  | 23d | 6d |  | EBWK 6 Day Egypt Holidays |  | 2006-07-29 | 120 | 0 | 0 |  |  | 10 | 02 | CO | 1V2 | 02L | V1 | V | C |  |  |  |  |  |

| ID | WBS | Activity | Type | Duration | Start | Finish | Predecessors | Total float | Free float | Calendar | Resources | zData Date | Sequence | PCA Criticality Index | PCA Duration Sensitivity | User Defined Field 1 | User Definer Field 2 | user_number1 | EB02 - UNIT | EB01 - RESP | EB06 - WORK OP | EB03 - AREA | EB05 - DISCIPLINE | EB04 - CLASS | EB00 - EPC | EB11 - FLAG | EB08 - TAG | Optimistic Duration | Most Likely Duration | Pessimistic Duration |
| --- | --- | --- | --- | --- | --- | --- | --- | --- | --- | --- | --- | --- | --- | --- | --- | --- | --- | --- | --- | --- | --- | --- | --- | --- | --- | --- | --- | --- | --- | --- |
|  | V2 | **Insulation** |  |  | 2007-06-27 | 2008-04-12 |  |  |  |  |  |  |  |  |  |  |  |  |  |  |  |  |  |  |  |  |  |  |  |  |
| CO02CV2110 |  | 02C Insulate - Equipment |  | 34d | 2007-06-27 | 2007-08-05 | CO02CM0110 FF+24d, CO02CV1130 FF+12d, PO000V2005 FF+30d, CO02CM0140 FF+24d, CO02CM0130 FF+24d, CO02CM0150 FF+24d | 190d | 103d | EBWK 6 Day Egypt Holidays |  | 2006-07-29 | 110 | 0 | 0 | 02C | V2110 | 0 | 02 | CO | 1V5 | 02C | V2 | V | C |  |  |  |  |  |
| WO020V2100 |  | 020 Insulation | WBS summary | 225d | 2007-06-27 | 2008-04-12 | EK000YA000 | -1d | 315d | EBWK 6 Day Egypt Holidays | Insulation - Construction [244538 h] | 2006-07-29 | V20 | 0 | 0 | 02A | V2V20 |  | 02 | CO | V20 | 020 | V2 | V | C | WC |  |  |  |  |
| CO02HM0245 |  | 02H Install Insulation (101-B) |  | 48d | 2007-06-30 | 2007-08-23 | CO02HM0225, PK02HMB51Z FS+30d | 174d | 0d | EBWK 6 Day Egypt Holidays |  | 2006-07-29 |  | 0 | 0 |  |  | 0 | 02 | CO | 1M1 | 02H | M0 | M | C | C | 101B |  |  |  |
| CO02FV2110 |  | 02F Insulate - Equipment |  | 16d | 2007-07-07 | 2007-07-24 | CO02FM0110 FF+24d, CO02FV1130 FF+24d, PO000V2005 FF+30d | 200d | 113d | EBWK 6 Day Egypt Holidays |  | 2006-07-29 | 110 | 0 | 0 | 02F | V2110 | -30 | 02 | CO | 1V5 | 02F | V2 | V | C |  |  |  |  |  |
| CO02KV2110 |  | 02K Insulate - Equipment |  | 21d | 2007-07-10 | 2007-08-04 | CO02KM0110 FF+24d, CO02KV1130 FF+24d, PO000V2005 FF+30d | 192d | 105d | EBWK 6 Day Egypt Holidays |  | 2006-07-29 | 110 | 0 | 0 | 02K | V2110 | -9 | 02 | CO | 1V5 | 02K | V2 | V | C |  |  |  |  |  |
| CO02BV2110 |  | 02B Insulate - Equipment |  | 6d | 2007-07-14 | 2007-07-19 | CO02BM0110 FF+24d, CO02BV1130 FF+24d, PO000V2005 FF+30d | 204d | 117d | EBWK 6 Day Egypt Holidays |  | 2006-07-29 | 110 | 0 | 0 | 02B | V2110 | 0 | 02 | CO | 1V5 | 02B | V2 | V | C |  |  |  |  |  |
| CO02AV2110 |  | 02A Insulate - Equipment |  | 19d | 2007-07-25 | 2007-08-15 | CO02AM0110 FF+24d, CO02AV1130 FF+24d, PO000V2005 FF+30d | 181d | 94d | EBWK 6 Day Egypt Holidays |  | 2006-07-29 | 110 | 0 | 0 | 02A | V2110 | 0 | 02 | CO | 1V5 | 02A | V2 | V | C |  |  |  |  |  |
| CO02DV2110 |  | 02D Insulate - Equipment |  | 13d | 2007-07-25 | 2007-08-08 | CO02DM0110 FF+24d, CO02DV1130 FF+24d, PO000V2005 FF+30d | 187d | 100d | EBWK 6 Day Egypt Holidays |  | 2006-07-29 | 110 | 0 | 0 | 02D | V2110 | -3 | 02 | CO | 1V5 | 02D | V2 | V | C |  |  |  |  |  |
| CO02MV2110 |  | 02M Insulate - Equipment |  | 15d | 2007-08-09 | 2007-08-26 | CO02MM0110 FF+24d, CO02MV1130 FF+24d, PO000V2005 FF+30d | 172d | 85d | EBWK 6 Day Egypt Holidays |  | 2006-07-29 | 110 | 0 | 0 | 02M | V2110 | -4 | 02 | CO | 1V5 | 02M | V2 | V | C |  |  |  |  |  |
| CO02EV2110 |  | 02E Insulate - Equipment |  | 18d | 2007-08-30 | 2007-09-26 | CO02EM0110 FF+24d, CO02EV1130 FF+24d, PO000V2005 FF+30d | 151d | 64d | EBWK 6 Day Egypt Holidays |  | 2006-07-29 | 110 | 0 | 0 | 02E | V2110 | 6 | 02 | CO | 1V5 | 02E | V2 | V | C |  |  |  |  |  |
| CO02NV2110 |  | 02N Insulate - Equipment |  | 12d | 2007-09-12 | 2007-10-08 | CO02NM0110 FF+24d, CO02NV1130 FF+24d, PO000V2005 FF+30d | 146d | 59d | EBWK 6 Day Egypt Holidays |  | 2006-07-29 | 110 | 0 | 0 | 02N | V2110 | -4 | 02 | CO | 1V5 | 02N | V2 | V | C |  |  |  |  |  |
| CO02LV2110 |  | 02L Insulate - Equipment |  | 44d | 2007-09-15 | 2007-11-25 | CO02LM0110 FF+24d, CO02LM0120, CO02LV1130 FF+24d, PO000V2005 FF+30d | 69d | 26d | EBWK 6 Day Egypt Holidays |  | 2006-07-29 | 110 | 0 | 0 |  |  | 10 | 02 | CO | 1V5 | 02L | V2 | V | C |  |  |  |  |  |
| CO02GV2120 |  | 02G Insulate - Piping |  | 39d | 2007-10-03 | 2007-11-29 | CO02GP0150 SS+24d, CO02GP0150 FF+24d, PO000V2005 FF+30d, EK000YA890 FS-60d | 110d | 56d | EBWK 6 Day Egypt Holidays |  | 2006-07-29 | 120 | 0 | 0 | 02G | V2120 | -11 | 02 | CO | 1V6 | 02G | V2 | V | C |  |  |  |  |  |
| CO02GV2110 |  | 02G Insulate - Equipment |  | 30d | 2007-10-10 | 2007-11-22 | CO02GM0110 FF+24d, CO02GV1130 FF+24d, PO000V2005 FF+30d, CO02GM0130 | 116d | 29d | EBWK 6 Day Egypt Holidays |  | 2006-07-29 | 110 | 0 | 0 | 02G | V2110 | -0.00208333 | 02 | CO | 1V5 | 02G | V2 | V | C |  |  |  |  |  |
| CO02CV2120 |  | 02C Insulate - Piping |  | 45d | 2007-10-29 | 2007-12-25 | CO02CP0150 SS+24d, CO02CP0150 FF+24d, PO000V2005 FF+30d, EK000YA890 FS-60d | 92d | 51d | EBWK 6 Day Egypt Holidays |  | 2006-07-29 | 120 | 0 | 0 | 02C | V2120 | 0 | 02 | CO | 1V6 | 02C | V2 | V | C |  |  |  |  |  |
| CO02YV2120 |  | 02Y Insulate - Piping |  | 72d | 2007-10-29 | 2008-01-26 | CO02YP0150 SS+24d, CO02YP0150 FF+24d, PO000V2005 FF+30d, EK000YA890 FS-60d | 65d | 12d | EBWK 6 Day Egypt Holidays |  | 2006-07-29 | 120 | 0 | 0 | 02Y | V2120 | 12 | 02 | CO | 1V6 | 02Y | V2 | V | C |  |  |  |  |  |
| CO02JV2120 |  | 02J Insulate - Piping |  | 29d | 2007-11-05 | 2007-12-08 | CO02JP0150 SS+24d, CO02JP0150 FF+24d, PO000V2005 FF+30d, EK000YA890 FS-60d | 102d | 60d | EBWK 6 Day Egypt Holidays |  | 2006-07-29 | 120 | 0 | 0 | 02J | V2120 | 7 | 02 | CO | 1V6 | 02J | V2 | V | C |  |  |  |  |  |
| CO02QV2110 |  | 02Q Insulate - Equipment |  | 6d | 2007-11-10 | 2007-11-15 | CO02QM0110, CO02QV1130, PO000V2005 FF+30d | 121d | 34d | EBWK 6 Day Egypt Holidays |  | 2006-07-29 | 110 | 0 | 0 | 02Q | V2110 | 12 | 02 | CO | 1V5 | 02Q | V2 | V | C |  |  |  |  |  |
| CO02BV2120 |  | 02B Insulate - Piping |  | 6d | 2007-11-11 | 2007-11-17 | CO02BP0150 SS+24d, CO02BP0150 FF+24d, PO000V2005 FF+30d, EK000YA890 FS-60d | 120d | 48d | EBWK 6 Day Egypt Holidays |  | 2006-07-29 | 120 | 0 | 0 | 02B | V2120 | 0 | 02 | CO | 1V6 | 02B | V2 | V | C |  |  |  |  |  |
| CO02FV2120 |  | 02F Insulate - Piping |  | 22d | 2007-11-13 | 2007-12-08 | CO02FP0150 SS+24d, CO02FP0150 FF+24d, PO000V2005 FF+30d, EK000YA890 FS-60d | 102d | 58d | EBWK 6 Day Egypt Holidays |  | 2006-07-29 | 120 | 0 | 0 | 02F | V2120 | -30 | 02 | CO | 1V6 | 02F | V2 | V | C |  |  |  |  |  |
| CO02JV2110 |  | 02J Insulate - Equipment |  | 22d | 2007-11-13 | 2007-12-08 | CO02JM0110 FF+24d, CO02JV1130 FF+24d, PO000V2005 FF+30d | 102d | 15d | EBWK 6 Day Egypt Holidays |  | 2006-07-29 | 110 | 0 | 0 | 02J | V2110 | 7 | 02 | CO | 1V5 | 02J | V2 | V | C |  |  |  |  |  |
| CO02HV2110 |  | 02H Insulate - Equipment |  | 35d | 2007-11-15 | 2007-12-31 | CO02HM0120, CO02HV1130 FF+24d, PO000V2005 FF+30d | 52d | 0d | EBWK 6 Day Egypt Holidays |  | 2006-07-29 | 110 | 4 | 0 | 02H | V2110 | -29 | 02 | CO | 1V5 | 02H | V2 | V | C |  |  | 32 | 35 | 37 |
| CO02PV2120 |  | 02P Insulate - Piping |  | 6d | 2007-11-26 | 2007-12-02 | CO02PP0150 SS+24d, CO02PP0150 FF+24d, PO000V2005 FF+30d, CO02PV1120, EK000YA890 FS-60d | 107d | 43d | EBWK 6 Day Egypt Holidays |  | 2006-07-29 | 120 | 0 | 0 | 02P | V2120 | 12 | 02 | CO | 1V6 | 02P | V2 | V | C |  |  |  |  |  |
| CO02MV2120 |  | 02M Insulate - Piping |  | 20d | 2007-11-27 | 2007-12-25 | CO02MP0150 SS+24d, CO02MP0150 FF+24d, PO000V2005 FF+30d, EK000YA890 FS-60d | 92d | 41d | EBWK 6 Day Egypt Holidays |  | 2006-07-29 | 120 | 0 | 0 | 02M | V2120 | -4 | 02 | CO | 1V6 | 02M | V2 | V | C |  |  |  |  |  |
| CO02PV2110 |  | 02P Insulate - Equipment |  | 6d | 2007-12-01 | 2007-12-06 | CO02PM0110 FF+24d, CO02PV1130 FS+24d, PO000V2005 FF+30d | 103d | 16d | EBWK 6 Day Egypt Holidays |  | 2006-07-29 | 110 | 0 | 0 | 02P | V2110 | 12 | 02 | CO | 1V5 | 02P | V2 | V | C |  |  |  |  |  |
| CO02KV2120 |  | 02K Insulate - Piping |  | 28d | 2007-12-02 | 2008-01-09 | CO02KP0150 SS+24d, CO02KP0150 FF+24d, PO000V2005 FF+30d, EK000YA890 FS-60d | 80d | 32d | EBWK 6 Day Egypt Holidays |  | 2006-07-29 | 120 | 0 | 0 | 02K | V2120 | -37 | 02 | CO | 1V6 | 02K | V2 | V | C |  |  |  |  |  |
| CO02QV2120 |  | 02Q Insulate - Piping |  | 6d | 2007-12-03 | 2007-12-09 | CO02QP0150 SS+24d, CO02QP0150 FF+24d, PO000V2005 FF+30d, CO02QV1120, EK000YA890 FS-60d | 101d | 38d | EBWK 6 Day Egypt Holidays |  | 2006-07-29 | 120 | 0 | 0 | 02Q | V2120 | 12 | 02 | CO | 1V6 | 02Q | V2 | V | C |  |  |  |  |  |
| CO02AV2120 |  | 02A Insulate - Piping |  | 26d | 2007-12-05 | 2008-01-09 | CO02AP0150 SS+24d, CO02AP0150 FF+24d, PO000V2005 FF+30d, EK000YA890 FS-60d | 79d | 28d | EBWK 6 Day Egypt Holidays |  | 2006-07-29 | 120 | 0 | 0 | 02A | V2120 | 0 | 02 | CO | 1V6 | 02A | V2 | V | C |  |  |  |  |  |
| CO02EV2120 |  | 02E Insulate - Piping |  | 24d | 2007-12-27 | 2008-01-23 | CO02EP0150 SS+24d, CO02EP0150 FF+24d, PO000V2005 FF+30d, EK000YA890 FS-60d | 67d | 20d | EBWK 6 Day Egypt Holidays |  | 2006-07-29 | 120 | 0 | 0 | 02E | V2120 | 24 | 02 | CO | 1V6 | 02E | V2 | V | C |  |  |  |  |  |
| CO02DV2120 |  | 02D Insulate - Piping |  | 18d | 2008-01-09 | 2008-01-29 | CO02DP0150 SS+24d, CO02DP0150 FF+24d, PO000V2005 FF+30d, EK000YA890 FS-60d | 62d | 4d | EBWK 6 Day Egypt Holidays |  | 2006-07-29 | 120 | 0 | 0 | 02D | V2120 | -3 | 02 | CO | 1V6 | 02D | V2 | V | C |  |  |  |  |  |
| CO02HV2120 |  | 02H Insulate - Piping |  | 47d | 2008-01-23 | 2008-03-17 | CO02HP0150 SS+24d, CO02HP0150 FF+24d, PO000V2005 FF+30d, EK000YA890 FS-60d | 21d | 11d | EBWK 6 Day Egypt Holidays |  | 2006-07-29 | 120 | 0 | 0 | 02H | V2120 | -20 | 02 | CO | 1V6 | 02H | V2 | V | C |  |  | 40 | 47 | 50 |
| CO02NV2120 |  | 02N Insulate - Piping |  | 12d | 2008-01-23 | 2008-02-05 | CO02NP0150 SS+24d, CO02NP0150 FF+24d, PO000V2005 FF+30d, EK000YA890 FS-60d | 56d | 0d | EBWK 6 Day Egypt Holidays |  | 2006-07-29 | 120 | 0 | 0 | 02N | V2120 | -4 | 02 | CO | 1V6 | 02N | V2 | V | C |  |  |  |  |  |
| CO02LV2120 |  | 02L Insulate - Piping |  | 59d | 2008-02-04 | 2008-04-12 | CO02LP0150 SS+24d, CO02LP0150 FF+24d, PO000V2005 FF+30d, EK000YA890 FS-60d | -1d | 14d | EBWK 6 Day Egypt Holidays |  | 2006-07-29 | 120 | 0 | 0 |  |  | 10 | 02 | CO | 1V6 | 02L | V2 | V | C |  |  |  |  |  |

| ID | WBS | Activity | Type | Duration | Start | Finish | Predecessors | Total float | Free float | Calendar | Resources | zData Date | Sequence | PCA Criticality Index | PCA Duration Sensitivity | User Defined Field 1 | User Definer Field 2 | user_number1 | EB02 - UNIT | EB01 - RESP | EB06 - WORK OP | EB03 - AREA | EB05 - DISCIPLINE | EB04 - CLASS | EB00 - EPC | EB11 - FLAG | EB19 - System |
| --- | --- | --- | --- | --- | --- | --- | --- | --- | --- | --- | --- | --- | --- | --- | --- | --- | --- | --- | --- | --- | --- | --- | --- | --- | --- | --- | --- |
|  | K0 | **Site Prep** |  |  | 2007-12-01 | 2008-03-31 |  |  |  |  |  |  |  |  |  |  |  |  |  |  |  |  |  |  |  |  |  |
| CO020K0100 |  | 020 Site Prep - Guard Posts & Gravel |  | 100d | 2007-12-01 | 2008-03-31 | CO000K0110, CO02AC0130 FF, CO02BC0130 FF, CO02CC0130 FF, CO02DC0130 FF, CO02EC0130 FF, CO02FC0130 FF, CO02GC0130 FF, CO02HC0130 FF, CO02JC0130 FF, CO02KC0130 FF, CO02LC0130 FF, CO02MC0130 FF, CO02YC0130 FF, CO010K0130 SS | 9d | 60d | EBWK 6 Day Egypt Holidays |  | 2006-07-29 | 130 | 0 | 0 | 03E | C0130 | 6 | 02 | CO | 1K0 | 020 | K0 | K | C |  |  |
| WO020K0100 |  | 020 Site Prep | WBS summary | 100d | 2007-12-01 | 2008-03-31 | EK000YA002 | 9d | 325d | EBWK 6 Day Egypt Holidays | Site Preparation/ Other Civil - Construction [9372.96 h] | 2006-07-29 | 130 | 0 | 0 | 03E | C0130 |  | 02 | CO | K00 | 020 | K0 | K | C | WC |  |
|  | T0 | **Mechanical Completion** |  |  | 2007-03-28 | 2008-04-28 |  |  |  |  |  |  |  |  |  |  |  |  |  |  |  |  |  |  |  |  |  |
| CO02UDT110 |  | 02U Mechanical Completion | milestone | 0d | 2007-03-28 | 2007-03-28 | CO02UP0150 FF, CO02AU4120, CO02BU4120, CO02CU4120, CO02DU4120, CO02EU4120, CO02FU4120, CO02GU4120, CO02HU4120, CO02JU4120, CO02KU4120, CO02LU4120, CO02MU4120, CO02UP0130 | 301d | 0d | EBWK 6 Day Egypt Holidays |  | 2006-07-29 | 110 | 0 | 0 | 01D | T0110 | -37 | 02 | CO | 1T1 | 02U | T0 | T | C | C | 02U |
| SC02UT0120 |  | 02U RFSU | milestone | 0d | 2007-03-28 | 2007-03-28 | CO02UDT110 FF | 380d | 439d | EBWK 7 Day No Holidays |  | 2006-07-29 | 120 | 0 | 0 | 02U | T0120 |  | 02 | SC | 000 | 02U | T0 | T | S | C | 02U |
| CO02BT0110 |  | 02B Mechanical Completion | milestone | 0d | 2008-01-14 | 2008-01-14 | CO02BE0120 FF, CO02BE0130 FF, CO02BI0140 FF, CO02BP0150 FF, CO02BV1120 FF, CO02BV1130 FF | 75d | 3d | EBWK 6 Day Egypt Holidays |  | 2006-07-29 | 110 | 0 | 0 | 02B | T0110 | 12 | 02 | CO | 1T1 | 02B | T0 | T | C |  |  |
| CO02GT0110 |  | 02G Mechanical Completion | milestone | 0d | 2008-01-15 | 2008-01-15 | CO02GE0120 FF, CO02GE0130 FF, CO02GI0140 FF, CO02GP0150 FF, CO02GV1120 FF, CO02GV1130 FF, CO020M0130 FF | 74d | 20d | EBWK 6 Day Egypt Holidays |  | 2006-07-29 | 110 | 12.5 | 0 | 02G | T0110 | -36 | 02 | CO | 1T1 | 02G | T0 | T | C | C |  |
| SC02BT0120 |  | 02B RFSU | milestone | 0d | 2008-01-17 | 2008-01-17 | SC02BI0150 FF, CO02BV2110, CO02BV2120 FF, CO02BT0110 FF | 85d | 144d | EBWK 7 Day No Holidays |  | 2006-07-29 | 120 | 0 | 0 | 02B | T0120 |  | 02 | SC | 000 | 02B | T0 | T | S |  |  |
| CO02AT0110 |  | 02A Mechanical Completion | milestone | 0d | 2008-01-19 | 2008-01-19 | CO02AE0120 FF, CO02AE0130 FF, CO02AI0140 FF, CO02AP0150 FF, CO02AV1120 FF, CO02AV1130 FF | 71d | 20d | EBWK 6 Day Egypt Holidays |  | 2006-07-29 | 110 | 0 | 0 | 02A | T0110 | 12 | 02 | CO | 1T1 | 02A | T0 | T | C | C |  |
| CO02DT0110 |  | 02D Mechanical Completion | milestone | 0d | 2008-01-19 | 2008-01-19 | CO02DE0120 FF, CO02DE0130 FF, CO02DI0140 FF, CO02DP0150 FF, CO02DV1120 FF, CO02DV1130 FF | 71d | 13d | EBWK 6 Day Egypt Holidays |  | 2006-07-29 | 110 | 0 | 0 | 02D | T0110 | 12 | 02 | CO | 1T1 | 02D | T0 | T | C | C |  |
| CO02KT0110 |  | 02K Mechanical Completion | milestone | 0d | 2008-01-21 | 2008-01-21 | CO02KE0120 FF, CO02KE0130 FF, CO02KI0140 FF, CO02KP0150 FF, CO02KV1120 FF, CO02KV1130 FF | 69d | 21d | EBWK 6 Day Egypt Holidays |  | 2006-07-29 | 110 | 0 | 0 | 02K | T0110 | 12 | 02 | CO | 1T1 | 02K | T0 | T | C | C |  |
| CO02NT0110 |  | 02N Mechanical Completion | milestone | 0d | 2008-01-21 | 2008-01-21 | CO02NE0120 FF, CO02NE0130 FF, CO02NI0140 FF, CO02NP0150 FF, CO02NV1120 FF, CO02NV1130 FF | 69d | 13d | EBWK 6 Day Egypt Holidays |  | 2006-07-29 | 110 | 0 | 0 | 02N | T0110 | 12 | 02 | CO | 1T1 | 02N | T0 | T | C | C |  |
| CO02PT0110 |  | 02P Mechanical Completion | milestone | 0d | 2008-01-22 | 2008-01-22 | CO02PE0120 FF, CO02PI0140 FF, CO02PP0150 FF, CO02PV1120 FF, CO02PV1130 FF | 68d | 4d | EBWK 6 Day Egypt Holidays |  | 2006-07-29 | 110 | 0 | 0 | 02P | T0110 | 12 | 02 | CO | 1T1 | 02P | T0 | T | C | C |  |
| CO02QT0110 |  | 02Q Mechanical Completion | milestone | 0d | 2008-01-23 | 2008-01-23 | CO02QE0120 FF, CO02QI0140 FF, CO02QP0150 FF, CO02QV1120 FF, CO02QV1130 FF | 67d | 4d | EBWK 6 Day Egypt Holidays |  | 2006-07-29 | 110 | 0 | 0 | 02Q | T0110 | 12 | 02 | CO | 1T1 | 02Q | T0 | T | C | C |  |
| CO02MT0110 |  | 02M Mechanical Completion | milestone | 0d | 2008-01-24 | 2008-01-24 | CO02ME0120 FF, CO02ME0130 FF, CO02MI0140 FF, CO02MP0150 FF, CO02MV1120 FF, CO02MV1130 FF | 66d | 15d | EBWK 6 Day Egypt Holidays |  | 2006-07-29 | 110 | 0 | 0 | 02M | T0110 | 12 | 02 | CO | 1T1 | 02M | T0 | T | C | C |  |
| CO02ET0110 |  | 02E Mechanical Completion | milestone | 0d | 2008-01-26 | 2008-01-26 | CO02EE0120 FF, CO02EE0130 FF, CO02EI0140 FF, CO02EP0150 FF, CO02EV1120 FF, CO02EV1130 FF | 65d | 18d | EBWK 6 Day Egypt Holidays |  | 2006-07-29 | 110 | 0 | 0 | 02E | T0110 | 12 | 02 | CO | 1T1 | 02E | T0 | T | C | C |  |
| CO02JT0110 |  | 02J Mechanical Completion | milestone | 0d | 2008-01-27 | 2008-01-27 | CO02JE0120 FF, CO02JE0130 FF, CO02JI0140 FF, CO02JP0150 FF, CO02JV1120 FF, CO02JV1130 FF | 64d | 22d | EBWK 6 Day Egypt Holidays |  | 2006-07-29 | 110 | 0 | 0 | 02J | T0110 | 12 | 02 | CO | 1T1 | 02J | T0 | T | C | C |  |
| SC02PT0120 |  | 02P RFSU | milestone | 0d | 2008-01-27 | 2008-01-27 | SC02PI0150 FF, CO02PV2110, CO02PV2120 FF, CO02PT0110 FF | 75d | 134d | EBWK 7 Day No Holidays |  | 2006-07-29 | 120 | 0 | 0 | 02P | T0120 |  | 02 | SC | 000 | 02P | T0 | T | S | C |  |
| CO02CT0110 |  | 02C Mechanical Completion | milestone | 0d | 2008-01-28 | 2008-01-28 | CO02CE0120 FF, CO02CE0130 FF, CO02CI0140 FF, CO02CP0150 FF, CO02CV1120 FF, CO02CV1130 FF | 63d | 22d | EBWK 6 Day Egypt Holidays |  | 2006-07-29 | 110 | 0 | 0 | 02C | T0110 | 26 | 02 | CO | 1T1 | 02C | T0 | T | C | C |  |
| SC02QT0120 |  | 02Q RFSU | milestone | 0d | 2008-01-28 | 2008-01-28 | SC02QI0150 FF, CO02QV2110, CO02QV2120 FF, CO02QT0110 FF | 74d | 133d | EBWK 7 Day No Holidays |  | 2006-07-29 | 120 | 0 | 0 | 02Q | T0120 |  | 02 | SC | 000 | 02Q | T0 | T | S | C |  |
| CO02FT0110 |  | 02F Mechanical Completion | milestone | 0d | 2008-01-31 | 2008-01-31 | CO02FE0120 FF, CO02FE0130 FF, CO02FI0140 FF, CO02FP0150 FF, CO02FV1120 FF, CO02FV1130 FF | 60d | 16d | EBWK 6 Day Egypt Holidays |  | 2006-07-29 | 110 | 0 | 0 | 02F | T0110 | 12 | 02 | CO | 1T1 | 02F | T0 | T | C | C |  |
| CO02YT0110 |  | 02Y Mechanical Completion | milestone | 0d | 2008-02-02 | 2008-02-02 | CO02YE0120 FF, CO02YE0130 FF, CO02YI0140 FF, CO02YP0150 FF, CO02YV1120 FF, CO02YV1130 FF | 59d | 6d | EBWK 6 Day Egypt Holidays |  | 2006-07-29 | 110 | 0 | 0 | 02Y | T0110 | 12 | 02 | CO | 1T1 | 02Y | T0 | T | C | C |  |
| SC02DT0120 |  | 02D RFSU | milestone | 0d | 2008-02-03 | 2008-02-03 | SC02DI0150 FF, CO02DV2110, CO02DV2120 FF, CO02DT0110 FF | 68d | 127d | EBWK 7 Day No Holidays |  | 2006-07-29 | 120 | 0 | 0 | 02D | T0120 |  | 02 | SC | 000 | 02D | T0 | T | S | C |  |
| SC02NT0120 |  | 02N RFSU | milestone | 0d | 2008-02-05 | 2008-02-05 | SC02NI0150 FF, CO02NV2110, CO02NV2120 FF, CO02NT0110 FF | 66d | 125d | EBWK 7 Day No Holidays |  | 2006-07-29 | 120 | 0 | 0 | 02N | T0120 |  | 02 | SC | 000 | 02N | T0 | T | S | C |  |
| SC02GT0120 |  | 02G RFSU | milestone | 0d | 2008-02-08 | 2008-02-08 | SC02GI0150 FF, CO02GV2110, CO02GV2120 FF, CO02GT0110 FF | 63d | 122d | EBWK 7 Day No Holidays |  | 2006-07-29 | 120 | 12.3 | 0 | 02G | T0120 |  | 02 | SC | 000 | 02G | T0 | T | S | C |  |
| SC02YT0120 |  | 02Y RFSU | milestone | 0d | 2008-02-09 | 2008-02-09 | SC02YI0150 FF, CO02YV2120 FF, CO02YT0110 FF | 62d | 121d | EBWK 7 Day No Holidays |  | 2006-07-29 | 120 | 0 | 0 | 02Y | T0120 |  | 02 | SC | 000 | 02Y | T0 | T | S | C |  |
| SC02AT0120 |  | 02A RFSU | milestone | 0d | 2008-02-11 | 2008-02-11 | SC02AI0150 FF, CO02AV2110, CO02AV2120 FF, CO02AT0110 FF | 60d | 119d | EBWK 7 Day No Holidays |  | 2006-07-29 | 120 | 0 | 0 | 02A | T0120 |  | 02 | SC | 000 | 02A | T0 | T | S | C |  |
| SC02MT0120 |  | 02M RFSU | milestone | 0d | 2008-02-11 | 2008-02-11 | SC02MI0150 FF, CO02MV2110, CO02MV2120 FF, CO02MT0110 FF | 60d | 119d | EBWK 7 Day No Holidays |  | 2006-07-29 | 120 | 0 | 0 | 02M | T0120 |  | 02 | SC | 000 | 02M | T0 | T | S | C |  |
| SC02KT0120 |  | 02K RFSU | milestone | 0d | 2008-02-15 | 2008-02-15 | SC02KI0150 FF, CO02KV2110, CO02KV2120 FF, CO02KT0110 FF | 56d | 115d | EBWK 7 Day No Holidays |  | 2006-07-29 | 120 | 0.2 | 0 | 02K | T0120 |  | 02 | SC | 000 | 02K | T0 | T | S | C |  |
| SC02ET0120 |  | 02E RFSU | milestone | 0d | 2008-02-16 | 2008-02-16 | SC02EI0150 FF, CO02EV2110, CO02EV2120 FF, CO02ET0110 FF | 55d | 114d | EBWK 7 Day No Holidays |  | 2006-07-29 | 120 | 0 | 0 | 02E | T0120 |  | 02 | SC | 000 | 02E | T0 | T | S | C |  |
| SC02FT0120 |  | 02F RFSU | milestone | 0d | 2008-02-19 | 2008-02-19 | SC02FI0150 FF, CO02FV2110, CO02FV2120 FF, CO02FT0110 FF | 52d | 111d | EBWK 7 Day No Holidays |  | 2006-07-29 | 120 | 0 | 0 | 02F | T0120 |  | 02 | SC | 000 | 02F | T0 | T | S | C |  |
| SC02JT0120 |  | 02J RFSU | milestone | 0d | 2008-02-22 | 2008-02-22 | SC02JI0150 FF, CO02JV2110, CO02JV2120 FF, CO02JT0110 FF | 49d | 108d | EBWK 7 Day No Holidays |  | 2006-07-29 | 120 | 0 | 0 | 02J | T0120 |  | 02 | SC | 000 | 02J | T0 | T | S | C |  |
| SC02CT0120 |  | 02C RFSU | milestone | 0d | 2008-02-23 | 2008-02-23 | SC02CI0150 FF, CO02CV2110, CO02CV2120 FF, CO02CT0110 FF | 48d | 107d | EBWK 7 Day No Holidays |  | 2006-07-29 | 120 | 0 | 0 | 02C | T0120 |  | 02 | SC | 000 | 02C | T0 | T | S | C |  |
| CO02LT0110 |  | 02L Mechanical Completion | milestone | 0d | 2008-03-22 | 2008-03-22 | CO02LE0120 FF, CO02LE0130 FF, CO02LI0140 FF, CO02LP0150 FF, CO02LV1120 FF, CO02LV1130 FF | 17d | 23d | EBWK 6 Day Egypt Holidays |  | 2006-07-29 | 110 | 0 | 0 |  |  | 10 | 02 | CO | 1T1 | 02L | T0 | T | C | C |  |
| CO02HT0110 |  | 02H Mechanical Completion | milestone | 0d | 2008-03-24 | 2008-03-24 | CO02HE0120 FF, CO02HE0130 FF, CO02HI0140 FF, CO02HP0150 FF, CO02HV1120 FF, CO02HV1130 FF, CO02HM0275 FF, CO02HI0145 FF | 15d | 5d | EBWK 6 Day Egypt Holidays |  | 2006-07-29 | 110 | 7 | 0 | 02H | T0110 | -20 | 02 | CO | 1T1 | 02H | T0 | T | C | C |  |
| SC02HT0120 |  | 02H RFSU | milestone | 0d | 2008-03-30 | 2008-03-30 | SC02HI0150 FF, CO02HV2110, CO02HV2120 FF, CO02HT0110 FF | 12d | 71d | EBWK 7 Day No Holidays |  | 2006-07-29 | 120 | 8.8 | 0 | 02H | T0120 |  | 02 | SC | 000 | 02H | T0 | T | S | C |  |
| SC02LT0120 |  | 02L RFSU | milestone | 0d | 2008-04-28 | 2008-04-28 | SC02LI0150 FF, CO02LV2110, CO02LV2120 FF, CO02LT0110 FF | -17d | 42d | EBWK 7 Day No Holidays |  | 2006-07-29 | 120 | 4.5 | 0 |  |  |  | 02 | SC | 000 | 02L | T0 | T | S | C |  |

| ID | WBS | Activity | Type | Duration | Start | Finish | Predecessors | Complete | Remaining | Planned start | Planned finish | Total float | Free float | Expected finish | Calendar | Resources | zData Date | Sequence | PCA Criticality Index | PCA Duration Sensitivity | User Defined Field 1 | User Definer Field 2 | EB02 - UNIT | EB01 - RESP | EB06 - WORK OP | EB03 - AREA | EB05 - DISCIPLINE | EB08 - TAG | EB10 - KEY | EB04 - CLASS | EB11 - FLAG | EB12 - TEMP | EB00 - EPC |
| --- | --- | --- | --- | --- | --- | --- | --- | --- | --- | --- | --- | --- | --- | --- | --- | --- | --- | --- | --- | --- | --- | --- | --- | --- | --- | --- | --- | --- | --- | --- | --- | --- | --- |
|  | T1 | **Commissioning** |  |  |  |  |  |  |  |  |  |  |  |  |  |  |  |  |  |  |  |  |  |  |  |  |  |  |  |  |  |  |  |
|  | CK | **Home Office Construction** |  |  |  |  |  |  |  |  |  |  |  |  |  |  |  |  |  |  |  |  |  |  |  |  |  |  |  |  |  |  |  |
|  | CN | **Project Completion** |  |  |  |  |  |  |  |  |  |  |  |  |  |  |  |  |  |  |  |  |  |  |  |  |  |  |  |  |  |  |  |
|  | CS | **Plant Services** |  |  |  |  |  |  |  |  |  |  |  |  |  |  |  |  |  |  |  |  |  |  |  |  |  |  |  |  |  |  |  |
|  | PL | **Pipeline** |  |  |  |  |  |  |  |  |  |  |  |  |  |  |  |  |  |  |  |  |  |  |  |  |  |  |  |  |  |  |  |
|  | X0 | **Fire & Safety** |  |  |  |  |  |  |  |  |  |  |  |  |  |  |  |  |  |  |  |  |  |  |  |  |  |  |  |  |  |  |  |
|  | D0 | **Demolition** |  |  |  |  |  |  |  |  |  |  |  |  |  |  |  |  |  |  |  |  |  |  |  |  |  |  |  |  |  |  |  |
|  | 03 | **Utility Plant** |  |  | 2006-05-07 | 2008-03-31 |  |  |  |  |  |  |  |  |  |  |  |  |  |  |  |  |  |  |  |  |  |  |  |  |  |  |  |
|  | C0 | **Concrete / Piling** |  |  | 2006-05-07 | 2007-04-18 |  |  |  |  |  |  |  |  |  |  |  |  |  |  |  |  |  |  |  |  |  |  |  |  |  |  |  |
| CO03DC0110 |  | 03D Form, Pour, Strip Fnds - 2002-F (Demin Water Tank) |  | 30d | 2006-05-07 A | 2006-05-31 A | XE000K0110, EM03DCV164, CO000K0108 SS, EM03DCV163 | 100% |  | 2006-05-13 | 2006-06-15 |  |  |  | EBWK 6 Day Egypt Holidays |  | 2006-07-29 | 110 | 0 | 0 | 03D | C0110 | 03 | CO | 1C1 | 03D | C0 | 2002F | T | C | PS | X | C |
| WO030C0100 |  | 030 Concrete & Excavation | WBS summary | 337d | 2006-05-07 A | 2007-04-18 | EK000YA000 | 79% | 71d | 2006-02-22 | 2007-04-18 | 229d | 599d |  | EBWK 6 Day Egypt Holidays | Concrete and Paving - Construction [59901.8 h] | 2006-07-29 | C00 | 0 | 0 | 03A | C0C00 | 03 | CO | 1C1 | 03A | C0 |  |  | C | WC |  | C |
| CO03CC0110 |  | 03C Form, Pour, Strip Fnds - Major Fnds |  | 24d | 2006-05-22 A | 2006-07-13 A | XE000K0110, EM03CCV164, CO000K0110 SS, EM03CCV110 FS+30d, EM03CPI132 FS+30d, EK000CV045 FS+30d, EM03CPI200 FS+40d | 100% |  | 2006-02-22 | 2006-03-21 |  |  |  | EBWK 6 Day Egypt Holidays |  | 2006-07-29 | 110 | 0 | 0 | 03C | C0110 | 03 | CO | 1C1 | 03C | C0 |  |  | C |  |  | C |
| CO03DC0150 |  | 03D Form, Pour, Strip Fnd - 2002J/JA (Fresh Cooling Water Pumps) |  | 30d | 2006-07-27 A | 2006-10-10 A | XE000K0110, EM03DCV164, CO03DC0110 SS, CO000K0110 SS, CO03DC0110, EM03DPI132, EK000CV045, EM03DPI120 SS, EM03DPI200, PK000MJ36J, PK000MJ36N, EM03DCV163 | 100% |  | 2006-08-02 | 2006-09-05 |  |  |  | EBWK 6 Day Egypt Holidays |  | 2006-07-29 | 150 | 0 | 0 | 03D | C0150 | 03 | CO | 1C1 | 03D | C0 | 2002J |  | C | PS |  | C |
| CO03FC0110 |  | 03F Form, Pour, Strip Fnds - Package Boiler |  | 60d | 2006-08-07 A | 2006-10-29 A | XE000K0110, EM03FCV164, CO000K0110 SS | 100% |  | 2006-08-07 | 2006-11-05 |  |  |  | EBWK 6 Day Egypt Holidays |  | 2006-07-29 | 110 | 0 | 0 | CK200 | C0110 | 03 | CO | 1C1 | 03F | C0 |  |  | C | PS |  | C |
| CO03YC0110 |  | 03Y Form, Pour, Strip Fnds - Sleeper Fnds |  | 78d | 2006-11-02 A | 2007-01-31 | XE000K0110, CO000K0110 SS, EM03YCV133 FS+30d | 94% | 5d | 2006-11-23 | 2007-02-28 | 98d | 0d | 2007-01-31 | EBWK 6 Day Egypt Holidays |  | 2006-07-29 | 110 | 0 | 0 | 03Y | C0110 | 03 | CO | 1C1 | 03Y | C0 |  |  | C |  |  | C |
| CO03AC0110 |  | 03A Form, Pour, Strip Fnds - Major Fnds Gen'l |  | 30d | 2006-11-04 A | 2007-02-15 | XE000K0110, EM03ACV164 FS+30d, CO000K0110 SS+90d | 40% | 18d | 2006-11-18 | 2006-12-21 | 155d | 0d | 2007-02-15 | EBWK 6 Day Egypt Holidays |  | 2006-07-29 | 110 | 0 | 0 | 03A | C0110 | 03 | CO | 1C1 | 03A | C0 |  |  | C |  |  | C |
| CO03BC0110 |  | 03B Form, Pour, Strip Fnds - Major Fnds (N/A) |  | 30d | 2006-11-16 A | 2006-11-16 A | XE000K0110, CO03BC0140 SS, EM03BPI132 FS+30d, EK000CV045 FS+30d, EM03BPI200 FS+40d, EM03UPIASF FS+40d, EM03UPIFWF FS+40d, EM03UPIOSF FS+40d, PK000MJ36J FS+45d, PK000MJ36N FS+45d, EM03BPI120 SS+71d | 100% |  | 2006-12-26 | 2007-02-05 |  |  |  | EBWK 6 Day Egypt Holidays |  | 2006-07-29 | 110 | 0 | 0 | 03B | C0110 | 03 | CO | 1C1 | 03B | C0 |  |  | C |  |  | C |
| CO03BC0140 |  | 03B Form, Pour, Strip Fnds - 2401-A Wastewater Sump |  | 18d | 2006-11-19 A | 2007-01-29 | XE000K0110, CO000K0110 SS+72d, EM03BCV112 FS+21d, EM03BPI132 FS+30d, EK000CV045 FS+30d, EM03BPI200 FS+40d, EM03UPIASF FS+40d, EM03UPIFWF FS+40d, EM03UPIOSF FS+40d, PK000MJ36J FS+45d, PK000MJ36N FS+45d, EM03BPI120 SS+71d | 83% | 3d | 2006-12-05 | 2006-12-25 | 266d | 0d | 2007-01-29 | EBWK 6 Day Egypt Holidays |  | 2006-07-29 | 110 | 0 | 0 | 03B | C0110 | 03 | CO | 1C1 | 03B | C0 | 2401F |  | C | PS |  | C |
| CO03FC0120 |  | 03F Form, Pour, Strip Fnds - Misc Fnds |  | 18d | 2006-12-02 A | 2007-04-10 | CO03FC0110, CO03FU4120, EM03FCV166 FS+20d, EM03FCV167 |  | 18d | 2007-03-01 | 2007-03-21 | 155d | 8d |  | EBWK 6 Day Egypt Holidays |  | 2006-07-29 | 120 | 0 | 0 | CK200 | C0120 | 03 | CO | 1C2 | 03F | C0 |  |  | C |  |  | C |
| CO03YC0120 |  | 03Y Form, Pour, Strip Fnds - Pipe Rack Fnds |  | 24d | 2006-12-18 A | 2007-01-25 A | XE000K0110, CO03YC0110 SS+36d, EM03YCV133 FS+30d | 100% |  | 2007-01-06 | 2007-02-01 |  |  |  | EBWK 6 Day Egypt Holidays |  | 2006-07-29 | 110 | 0 | 0 | 03Y | C0110 | 03 | CO | 1C1 | 03Y | C0 |  |  | C |  |  | C |
| CO03EC0110 |  | 03E Form, Pour, Strip Fnds - 2001-U Water Treatment |  | 48d | 2007-01-27 | 2007-03-22 | XE000K0110, EM03ECV164 FS+30d, CO000K0110 SS+144d, EM03ECV112 FS+24d |  |  |  |  | 126d | 5d |  | EBWK 6 Day Egypt Holidays |  | 2006-07-29 | 110 | 0 | 0 | 03E | C0110 | 03 | CO | 1C1 | 03E | C0 | 2001U |  | C | PS |  | C |
| CO03DC0120 |  | 03D Form, Pour, Strip Fnds - Misc Fnds |  | 12d | 2007-02-05 | 2007-02-18 | CO03DC0110 FF+12d, CO03DU4120, EM03DCV166 FS+20d, EM03DCV167, CO03DC0150 FF+12d |  |  |  |  | 199d | 10d |  | EBWK 6 Day Egypt Holidays |  | 2006-07-29 | 120 | 0 | 0 | 03D | C0120 | 03 | CO | 1C2 | 03D | C0 |  |  | C |  |  | C |
| CO03AC0120 |  | 03A Form, Pour, Strip Fnds - Misc Fnds |  | 12d | 2007-03-14 | 2007-03-27 | CO03AC0110, CO03AU4120 FF+6d, EM03ACV166 FS+20d, EM03ACV167 |  |  |  |  | 141d | 8d |  | EBWK 6 Day Egypt Holidays |  | 2006-07-29 | 120 | 0 | 0 | 03A | C0120 | 03 | CO | 1C2 | 03A | C0 |  |  | C |  |  | C |
| CO03BC0120 |  | 03B Form, Pour, Strip Fnds - Misc Fnds |  | 12d | 2007-03-20 | 2007-04-02 | CO03BC0110 FF+6d, CO03BU4120, EM03BCV166 FS+20d, EM03BCV167, CO03BC0140 |  |  |  |  | 243d | 6d |  | EBWK 6 Day Egypt Holidays |  | 2006-07-29 | 120 | 0 | 0 | 03B | C0120 | 03 | CO | 1C2 | 03B | C0 |  |  | C |  |  | C |
| CO03CC0120 |  | 03C Form, Pour, Strip Fnds - Misc Fnds |  | 12d | 2007-03-21 | 2007-04-03 | CO03CC0110, CO03CU4120, EM03CCV166 FS+20d, EM03CCV167 |  |  |  |  | 166d | 8d |  | EBWK 6 Day Egypt Holidays |  | 2006-07-29 | 120 | 0 | 0 | 03C | C0120 | 03 | CO | 1C2 | 03C | C0 |  |  | C |  |  | C |
| CO03EC0120 |  | 03E Form, Pour, Strip Fnds - Misc Fnds |  | 18d | 2007-03-29 | 2007-04-18 | CO03EC0110, CO03EU4120, EM03ECV166 FS+20d, EM03ECV167 |  |  |  |  | 121d | 13d |  | EBWK 6 Day Egypt Holidays |  | 2006-07-29 | 120 | 0 | 0 | 03E | C0120 | 03 | CO | 1C2 | 03E | C0 |  |  | C |  |  | C |

| ID | WBS | Activity | Type | Duration | Start | Finish | Predecessors | Complete | Remaining | Planned start | Planned finish | Total float | Free float | Constraint | Expected finish | Calendar | Resources | zData Date | Sequence | PCA Criticality Index | PCA Duration Sensitivity | User Defined Field 1 | User Definer Field 2 | EB02 - UNIT | EB01 - RESP | EB06 - WORK OP | EB03 - AREA | EB05 - DISCIPLINE | EB04 - CLASS | EB00 - EPC | EB11 - FLAG | user_number1 | EB19 - System | EB09 - IPMS |
| --- | --- | --- | --- | --- | --- | --- | --- | --- | --- | --- | --- | --- | --- | --- | --- | --- | --- | --- | --- | --- | --- | --- | --- | --- | --- | --- | --- | --- | --- | --- | --- | --- | --- | --- |
|  | C1 | **Concrete Paving** |  |  | 2007-03-03 | 2007-05-17 |  |  |  |  |  |  |  |  |  |  |  |  |  |  |  |  |  |  |  |  |  |  |  |  |  |  |  |  |
| CO03DC0130 |  | 03D Install Paving |  | 6d | 2007-03-03 | 2007-03-08 | CO03DC0120, CO03DU3110 |  |  |  |  | 189d | 84d | start on or after 2007-03-01 |  | EBWK 6 Day Egypt Holidays |  | 2006-07-29 | 130 | 0 | 0 | 03D | C0130 | 03 | CO | 1C3 | 03D | C0 | C | C |  |  |  |  |
| WO030C0110 |  | 030 Concrete Paving | WBS summary | 66d | 2007-03-03 | 2007-05-17 | EK000YA000 |  |  |  |  | 210d | 574d |  |  | EBWK 6 Day Egypt Holidays | Concrete and Paving - Construction [362.47 h] | 2006-07-29 | C00 | 0 | 0 | 03A | C0C00 | 03 | CO | 1C3 | 03A | C0 | C | C | WC |  |  |  |
| CO03BC0130 |  | 03B Install Paving |  | 12d | 2007-04-03 | 2007-04-16 | CO03BC0120 FF+6d, CO03BU3110 |  |  |  |  | 237d | 74d |  |  | EBWK 6 Day Egypt Holidays |  | 2006-07-29 | 130 | 0 | 0 | 03B | C0130 | 03 | CO | 1C3 | 03B | C0 | C | C |  |  |  |  |
| CO03AC0130 |  | 03A Install Paving |  | 6d | 2007-04-07 | 2007-04-12 | CO03AC0120, CO03AU3110 |  |  |  |  | 133d | 77d | start on or after 2007-04-07 |  | EBWK 6 Day Egypt Holidays |  | 2006-07-29 | 130 | 0 | 0 | 03A | C0130 | 03 | CO | 1C3 | 03A | C0 | C | C |  |  |  |  |
| CO03CC0130 |  | 03C Install Paving |  | 6d | 2007-04-14 | 2007-04-19 | CO03CC0120, CO03CU3110 |  |  |  |  | 158d | 48d | start on or after 2007-04-14 |  | EBWK 6 Day Egypt Holidays |  | 2006-07-29 | 130 | 0 | 0 | 03C | C0130 | 03 | CO | 1C3 | 03C | C0 | C | C |  |  |  |  |
| CO03FC0130 |  | 03F Install Paving |  | 12d | 2007-04-21 | 2007-05-03 | CO03FC0120, CO03FU3110 |  |  |  |  | 147d | 36d | start on or after 2007-04-21 |  | EBWK 6 Day Egypt Holidays |  | 2006-07-29 | 130 | 0 | 0 | CK200 | C0130 | 03 | CO | 1C3 | 03F | C0 | C | C |  |  |  |  |
| CO03EC0130 |  | 03E Install Paving |  | 12d | 2007-05-05 | 2007-05-17 | CO03EC0120, CO03EU3110 |  |  |  |  | 108d | 24d | start on or after 2007-05-05 |  | EBWK 6 Day Egypt Holidays |  | 2006-07-29 | 130 | 0 | 0 | 03E | C0130 | 03 | CO | 1C3 | 03E | C0 | C | C |  |  |  |  |
|  | A0 | **Buildings** |  |  |  |  |  |  |  |  |  |  |  |  |  |  |  |  |  |  |  |  |  |  |  |  |  |  |  |  |  |  |  |  |
|  | U3 | **U/G Electrical** |  |  | 2006-11-25 | 2007-04-11 |  |  |  |  |  |  |  |  |  |  |  |  |  |  |  |  |  |  |  |  |  |  |  |  |  |  |  |  |
| CO03AU3110 |  | 03A U/G Earthing Installation |  | 8d | 2006-11-25 A | 2007-04-03 | CO03AU4120 FF+12d, EM000ELEH2 FS+30d | 25% | 6d | 2007-03-06 | 2007-03-14 | 135d | 0d |  | 2007-03-14 | EBWK 6 Day Egypt Holidays |  | 2006-07-29 | 110 | 0 | 0 | 03A | U3110 | 03 | CO | 1U3 | 03A | U3 | U | C | C | 8 |  |  |
| WO030U3100 |  | 030 Install U/G Electrical | WBS summary | 50d | 2006-11-25 A | 2007-04-11 | EK000YA000 | 2% | 49d | 2007-02-08 | 2007-04-07 | 229d | 605d |  |  | EBWK 6 Day Egypt Holidays | U/G Piping - Construction [2724.8 h] | 2006-07-29 | U30 | 0 | 0 | 03A | U3U30 | 03 | CO | U30 | 03A | U3 | U | C | WC |  |  |  |
| CO03BU3110 |  | 03B U/G Earthing Installation |  | 8d | 2006-12-01 A | 2007-04-02 | CO03BU4120 FF+12d, EM000ELEH2 FS+30d |  | 8d | 2007-03-20 | 2007-03-28 | 237d | 0d |  |  | EBWK 6 Day Egypt Holidays |  | 2006-07-29 | 110 | 0 | 0 | 03B | U3110 | 03 | CO | 1U3 | 03B | U3 | U | C | C | 24 |  |  |
| CO03CU3110 |  | 03C U/G Earthing Installation |  | 8d | 2006-12-01 A | 2007-04-03 | CO03CU4120 FF+12d, EM000ELEH2 FS+30d |  | 8d | 2007-03-21 | 2007-03-29 | 166d | 8d |  |  | EBWK 6 Day Egypt Holidays |  | 2006-07-29 | 110 | 0 | 0 | 03C | U3110 | 03 | CO | 1U3 | 03C | U3 | U | C | C | 8 |  |  |
| CO03DU3110 |  | 03D U/G Earthing Installation |  | 4d | 2006-12-01 A | 2007-02-18 | CO03DU4120 FF+12d, EM000ELEH2 FS+30d |  | 4d | 2007-02-08 | 2007-02-12 | 199d | 10d |  |  | EBWK 6 Day Egypt Holidays |  | 2006-07-29 | 110 | 0 | 0 | 03D | U3110 | 03 | CO | 1U3 | 03D | U3 | U | C | C | 22 |  |  |
| CO03EU3110 |  | 03E U/G Earthing Installation |  | 24d | 2006-12-01 A | 2007-04-11 | CO03EU4120 FF+12d, EM000ELEH2 FS+30d | 50% | 12d | 2007-03-11 | 2007-04-07 | 127d | 19d |  |  | EBWK 6 Day Egypt Holidays |  | 2006-07-29 | 110 | 0 | 0 | 03E | U3110 | 03 | CO | 1U3 | 03E | U3 | U | C | C | 30 |  |  |
| CO03FU3110 |  | 03F U/G Earthing Installation |  | 8d | 2007-01-01 A | 2007-04-03 | CO03FU4120 FF+12d, EM020ELEH2 FS+30d |  | 8d | 2007-03-21 | 2007-03-29 | 161d | 14d |  |  | EBWK 6 Day Egypt Holidays |  | 2006-07-29 | 110 | 0 | 0 | CK200 | U3110 | 03 | CO | 1U3 | 03F | U3 | U | C | C | 0 |  |  |
|  | U4 | **U/G Piping** |  |  | 2006-12-09 | 2007-03-28 |  |  |  |  |  |  |  |  |  |  |  |  |  |  |  |  |  |  |  |  |  |  |  |  |  |  |  |  |
| CO03UP0150 |  | 03U LB Pipe Erection (Firewater Piping) |  | 144d | 2006-12-09 A | 2007-03-08 | CK03UU4150 FF+18d, EM03UPI200, CK03UU4150 SS+21d | 87% | 19d | 2006-12-09 | 2007-05-31 | 212d | 0d | start on or after 2006-12-09 | 2007-02-10 | EBWK 6 Day Egypt Holidays |  | 2006-07-29 | 130 | 0 | 0 | 01D | P0130 | 03 | CO | 1U2 | 03U | U4 | U | C | PS |  | FW |  |
| WO030U4100 |  | 030 U/G Piping Installation | WBS summary | 144d | 2006-12-09 A | 2007-03-28 | EK000YA000 | 63% | 53d | 2006-12-09 | 2007-05-31 | 229d | 617d |  |  | EBWK 6 Day Egypt Holidays | U/G Piping - Construction [40011.7 h] | 2006-07-29 | U40 | 0 | 0 | 03A | U4U40 | 03 | CO | 1U2 | 030 | U4 | U | C | WC |  |  | F |
| CO03DU4120 |  | 03D U/G Piping Installation |  | 8d | 2007-01-27 | 2007-02-04 | CO03DC0110 FF, CK03DU4110 |  |  |  |  | 199d | 0d | start on or after 2006-12-15 |  | EBWK 6 Day Egypt Holidays |  | 2006-07-29 | 120 | 0 | 0 | 03D | U4120 | 03 | CO | 1U2 | 03D | U4 | U | C | PS |  |  |  |
| CO03AU4120 |  | 03A U/G Piping Installation |  | 17d | 2007-03-01 | 2007-03-20 | CO03AC0110 FF, CK03AU4110 FS+30d |  |  |  |  | 135d | 0d |  |  | EBWK 6 Day Egypt Holidays |  | 2006-07-29 | 120 | 0 | 0 | 03A | U4120 | 03 | CO | 1U2 | 03A | U4 | U | C | PS |  |  |  |
| CO03BU4120 |  | 03B U/G Piping Installation |  | 16d | 2007-03-01 | 2007-03-19 | CO03BC0110 FF, CK03BU4110 FS+30d, CO03BC0140 FF |  |  |  |  | 237d | 0d |  |  | EBWK 6 Day Egypt Holidays |  | 2006-07-29 | 120 | 0 | 0 | 03B | U4120 | 03 | CO | 1U2 | 03B | U4 | U | C | PS |  |  |  |
| CO03CU4120 |  | 03C U/G Piping Installation |  | 17d | 2007-03-01 | 2007-03-20 | CO03CC0110 FF, CK03CU4110 FS+30d |  |  |  |  | 166d | 0d |  |  | EBWK 6 Day Egypt Holidays |  | 2006-07-29 | 120 | 0 | 0 | 03C | U4120 | 03 | CO | 1U2 | 03C | U4 | U | C | PS |  |  |  |
| CO03EU4120 |  | 03E U/G Piping Installation |  | 24d | 2007-03-01 | 2007-03-28 | CO03EC0110 FF, CK03EU4110 FS+30d |  |  |  |  | 121d | 0d |  |  | EBWK 6 Day Egypt Holidays |  | 2006-07-29 | 120 | 0 | 0 | 03E | U4120 | 03 | CO | 1U2 | 03E | U4 | U | C | C |  |  |  |
| CO03FU4120 |  | 03F U/G Piping Installation |  | 17d | 2007-03-01 | 2007-03-20 | CO03FC0110 FF, CK03FU4110 FS+30d |  |  |  |  | 155d | 0d |  |  | EBWK 6 Day Egypt Holidays |  | 2006-07-29 | 120 | 0 | 0 | CK200 | U4120 | 03 | CO | 1U2 | 03F | U4 | U | C | PS |  |  |  |

Notes:
- CO03AU3110: P3 Activity Log Info: Need to tie to material / deliveries
- CO03BU3110: P3 Activity Log Info: Need to tie to material / deliveries
- CO03CU3110: P3 Activity Log Info: Need to tie to material / deliveries
- CO03DU3110: P3 Activity Log Info: Need to tie to material / deliveries
- CO03EU3110: P3 Activity Log Info: Need to tie to material / deliveries
- CO03FU3110: P3 Activity Log Info: Need to tie to material / deliveries
- CO03UP0150: P3 Activity Log Info: Plant L.O. thru start erection of pipe 58 / weeks
- CO03DU4120: P3 Activity Log Info: Need to tie to material / deliveries
- CO03AU4120: P3 Activity Log Info: Need to tie to material / deliveries
- CO03BU4120: P3 Activity Log Info: Need to tie to material / deliveries
- CO03CU4120: P3 Activity Log Info: Need to tie to material / deliveries
- CO03EU4120: P3 Activity Log Info: Need to tie to material / deliveries
- CO03FU4120: P3 Activity Log Info: Need to tie to material / deliveries

| ID | WBS | Activity | Type | Duration | Start | Finish | Predecessors | Complete | Remaining | Planned start | Planned finish | Total float | Free float | Constraint | Expected finish | Calendar | Resources | zData Date | Sequence | PCA Criticality Index | PCA Duration Sensitivity | User Defined Field 1 | User Definer Field 2 | user_number1 | EB02 - UNIT | EB01 - RESP | EB06 - WORK OP | EB03 - AREA | EB05 - DISCIPLINE | EB04 - CLASS | EB00 - EPC | EB11 - FLAG | EB08 - TAG | EB07 - REQN | Optimistic Duration | Most Likely Duration | Pessimistic Duration | user_integer2 | EB14 - RISK | EB12 - TEMP |
| --- | --- | --- | --- | --- | --- | --- | --- | --- | --- | --- | --- | --- | --- | --- | --- | --- | --- | --- | --- | --- | --- | --- | --- | --- | --- | --- | --- | --- | --- | --- | --- | --- | --- | --- | --- | --- | --- | --- | --- | --- |
|  | M0 | **Mechanical Equipment** |  |  | 2006-09-18 | 2007-05-26 |  |  |  |  |  |  |  |  |  |  |  |  |  |  |  |  |  |  |  |  |  |  |  |  |  |  |  |  |  |  |  |  |  |  |
| CO03CM0110 |  | 03C Set Static Equipment - 2203/4-F Caustic, Sulfuric Acid Tanks |  | 6d | 2006-09-18 A | 2006-09-18 A | CO03CC0110, PK03CMD46Z | 100% |  | 2007-03-03 | 2007-03-08 |  |  |  |  | EBWK 6 Day Egypt Holidays |  | 2006-07-29 | 110 | 0 | 0 | 03C | M0110 | 8 | 03 | CO | 1M1 | 03C | M0 | M | C |  |  |  |  |  |  |  |  |  |
| WO030M0100 |  | 030 Major Equipment | WBS summary | 150d | 2006-09-18 A | 2007-05-26 | EK000YA000 | 32% | 102d | 2007-03-03 | 2007-08-23 | 192d | 568d |  |  | EBWK 6 Day Egypt Holidays | Major Equipment - Construction [16935.4 h] | 2006-07-29 | M00 | 0 | 0 | 03A | M0M00 |  | 03 | CO | 1M1 | 030 | M0 | M | C | WC |  |  |  |  |  |  |  |  |
| CO03FM0110 |  | 03F Erect 2002-U Package Boiler |  | 96d | 2006-12-17 A | 2007-04-12 | CO03FC0110, PK03FMU41Z, PK03FMD46Z | 31% | 66d | 2007-05-05 | 2007-08-23 | 159d | 0d |  | 2007-04-12 | EBWK 6 Day Egypt Holidays |  | 2006-07-29 | 110 | 0 | 0 | CK200 | M0110 | 0 | 03 | CO | 1M1 | 03F | M0 | M | C |  | 2002U |  |  |  |  |  |  |  |
| CO03FM0150 |  | 03F Install Chemical Injection System |  | 36d | 2007-03-03 | 2007-04-12 | CO03FM0110 SS+48d, CO03FM0110 FF |  |  |  |  | 159d | 0d |  |  | EBWK 6 Day Egypt Holidays |  | 2006-07-29 | 150 | 0 | 0 | CK200 | M0150 | 0 | 03 | CO | 1M1 | 03F | M0 | M | C |  |  |  |  |  |  |  |  |  |
| CO03BM0110 |  | 03B Set Static Equipment - Gen'l |  | 28d | 2007-03-31 | 2007-05-02 | CO03BC0110, PK03BMU22Z, PK03BMU29Z |  |  |  |  | 212d | 14d |  |  | EBWK 6 Day Egypt Holidays |  | 2006-07-29 | 110 | 0 | 0 | 03B | M0110 | 24 | 03 | CO | 1M1 | 03B | M0 | M | C |  |  |  |  |  |  |  |  |  |
| CO03EM0110 |  | 03E Set Static Equipment - Gen'l |  | 30d | 2007-03-31 | 2007-05-05 | CO03EC0110, PK03EMU33Z |  |  |  |  | 135d | 36d |  |  | EBWK 6 Day Egypt Holidays |  | 2006-07-29 | 110 | 0 | 0 | 03E | M0110 | 30 | 03 | CO | 1M1 | 03E | M0 | M | C |  |  |  |  |  |  |  |  |  |
| CO03CM0150 |  | 03C Set Rotating Equipment |  | 6d | 2007-04-14 | 2007-04-21 | PK03CMJ36Z, CO03CC0110 |  |  |  |  | 146d | 0d |  |  | EBWK 6 Day Egypt Holidays |  | 2006-07-29 | 150 | 0 | 0 | 03C | M0150 | 8 | 03 | CO | 1M1 | 03C | M0 | M | C |  |  |  |  |  |  |  |  |  |
| CO03DM0150 |  | 03D Set Rotating Equipment |  | 12d | 2007-04-14 | 2007-04-28 | PK03DMJ36Z, CO03DC0150 FS+12d, CO03DM0145 FF, WO030M0100 FF |  |  |  |  | 158d | 0d |  |  | EBWK 6 Day Egypt Holidays |  | 2006-07-29 | 150 | 0 | 0 | 03D | M0150 | 22 | 03 | CO | 1M1 | 03D | M0 | M | C |  |  |  |  |  |  |  |  |  |
| CO03BM0150 |  | 03B Set Rotating Equipment |  | 18d | 2007-04-25 | 2007-05-15 | PK02LMJ32Z, PK02LMJ35Z, PK01BMJ35Z, PK03CMJ35Z, PK03DMJ35Z, PK05AMJ35Z, CO03BC0140 FF |  |  |  |  | 200d | 0d |  |  | EBWK 6 Day Egypt Holidays |  | 2006-07-29 | 150 | 0 | 0 | 03B | M0150 | -16 | 03 | CO | 1M1 | 03B | M0 | M | C |  |  |  |  |  |  |  |  |  |
| CO03AM0110 |  | 03A Set Static Equipment |  | 24d | 2007-04-28 | 2007-05-26 | CO03AC0110, PK03AML50Z, PK000ML90Z |  |  |  |  | 95d | 39d |  |  | EBWK 6 Day Egypt Holidays |  | 2006-07-29 | 110 | 0 | 0 | 03A | M0110 | 1 | 03 | CO | 1M1 | 03A | M0 | M | C |  |  |  |  |  |  |  |  |  |
|  | S0 | **Structural / Misc. Steel** |  |  | 2007-04-05 | 2007-07-25 |  |  |  |  |  |  |  |  |  |  |  |  |  |  |  |  |  |  |  |  |  |  |  |  |  |  |  |  |  |  |  |  |  |  |
| CO03YS0110 |  | 03Y Erect Structural Steel |  | 18d | 2007-04-05 | 2007-04-25 | CO03YC0120, PO03YS0000 FS+30d |  |  |  |  | 39d | 0d |  |  | EBWK 6 Day Egypt Holidays |  | 2006-07-29 | 110 | 0 | 0 | 03Y | C0110 | 11 | 03 | CO | 1S1 | 03Y | S0 | S | C | PS |  |  |  |  |  |  |  |  |
| WO030S0100 |  | 030 Erect Steel | WBS summary | 96d | 2007-04-05 | 2007-07-25 | EK000YA000 |  |  |  |  | 157d | 515d |  |  | EBWK 6 Day Egypt Holidays | Structural Steel - Construction [6526.11 h] | 2006-07-29 | S00 | 0 | 0 | 03A | S0S00 |  | 03 | CO | 1S1 | 030 | S0 | S | C | WC |  |  |  |  |  |  |  |  |
| CO03BS0120 |  | 03B Erect Misc Steel - Structure |  | 24d | 2007-06-14 | 2007-07-11 | PO03BS0010 FS+30d |  |  |  |  | 169d | 0d |  |  | EBWK 6 Day Egypt Holidays |  | 2006-07-29 | 120 | 0 | 0 | 03B | S0120 | 5 | 03 | CO | 1S2 | 03B | S0 | S | C | C |  | B1040 |  |  |  |  |  |  |
| CO03FS0120 |  | 03F Erect Misc Steel |  | 36d | 2007-06-14 | 2007-07-25 | PO03FS0010 FS+30d |  |  |  |  | 88d | 0d |  |  | EBWK 6 Day Egypt Holidays |  | 2006-07-29 | 120 | 0 | 0 | CK200 | S0120 | 36 | 03 | CO | 1S2 | 03F | S0 | S | C | C |  | B1040 |  |  |  |  |  |  |
| CO03AS0120 |  | 03A Erect Misc Steel - Structure |  | 24d | 2007-06-21 | 2007-07-18 | PO03AS0010 FS+30d |  |  |  |  | 56d | 0d |  |  | EBWK 6 Day Egypt Holidays |  | 2006-07-29 | 120 | 0 | 0 | 03A | S0120 | 12 | 03 | CO | 1S2 | 03A | S0 | S | C | C |  | B1040 |  |  |  |  |  |  |
| CO03CS0120 |  | 03C Erect Misc Steel |  | 18d | 2007-06-21 | 2007-07-11 | PO03CS0010 FS+30d |  |  |  |  | 87d | 0d |  |  | EBWK 6 Day Egypt Holidays |  | 2006-07-29 | 120 | 0 | 0 | 03C | S0120 | 1 | 03 | CO | 1S2 | 03C | S0 | S | C | C |  | B1040 |  |  |  |  |  |  |
| CO03DS0120 |  | 03D Erect Misc Steel |  | 24d | 2007-06-21 | 2007-07-18 | PO03DS0010 FS+30d |  |  |  |  | 98d | 0d |  |  | EBWK 6 Day Egypt Holidays |  | 2006-07-29 | 120 | 0 | 0 | 03D | S0120 | 30 | 03 | CO | 1S2 | 03D | S0 | S | C | C |  | B1040 |  |  |  |  |  |  |
| CO03ES0120 |  | 03E Erect Misc Steel - Structure |  | 24d | 2007-06-21 | 2007-07-18 | PO03ES0010 FS+30d |  |  |  |  | 58d | 0d |  |  | EBWK 6 Day Egypt Holidays |  | 2006-07-29 | 120 | 7.5 | 5.3 | 03E | S0120 | -5 | 03 | CO | 1S2 | 03E | S0 | S | C | C |  | B1040 | 20 | 24 | 29 |  |  |  |
|  | P0 | **A/G Piping** |  |  | 2007-04-26 | 2007-09-22 |  |  |  |  |  |  |  |  |  |  |  |  |  |  |  |  |  |  |  |  |  |  |  |  |  |  |  |  |  |  |  |  |  |  |
| CO03YP0130 |  | 03Y LB Pipe Erection |  | 90d | 2007-04-26 | 2007-08-08 | CK03YP0110, CO03YV1110 FF+10d, PK000PTA0K FF+80d, CO03YC0110 SS+36d, CO03YC0110 FF+36d, EM03YPI138 FS+30d, EM03YSY272 FS+30d, CO03YS0110 |  |  |  |  | 39d | 0d |  |  | EBWK 6 Day Egypt Holidays |  | 2006-07-29 | 130 | 0 | 0 | 03Y | P0130 | 11 | 03 | CO | 1P2 | 03Y | P0 | P | C | C |  |  |  |  |  | 90 | 21 |  |
| WO030P0100 |  | 030 Above Ground Pipe | WBS summary | 124d | 2007-04-26 | 2007-09-22 | EK000YA000 |  |  |  |  | 138d | 469d |  |  | EBWK 6 Day Egypt Holidays | Aboveground Pipe - Construction [77939 h] | 2006-07-29 | P00 | 0 | 0 | 03A | P0P00 |  | 03 | CO | P00 | 03A | P0 | P | C | WC |  |  |  |  |  |  |  |  |
| CO03YP0140 |  | 03Y SB Pipe Erection |  | 90d | 2007-05-03 | 2007-08-15 | CO03YP0130 SS+6d, CO03YP0130 FF+6d, PK000PIA1P FF+72d |  |  |  |  | 45d | 0d |  |  | EBWK 6 Day Egypt Holidays |  | 2006-07-29 | 140 | 0 | 0 | 03Y | P0140 | 11 | 03 | CO | 1P3 | 03Y | P0 | P | C | C |  |  |  |  |  | 90 | 21 |  |
| CO03FP0130 |  | 03F LB Pipe Erection |  | 34d | 2007-06-24 | 2007-08-01 | CO03FM0110 FF+24d, CO03FM0150 FF+24d, CK03FP0110, CO03FV1110 FF+10d, PK000PTA0K FS+30d, EM03FPI138 FS+30d, EM03FSY272 FS+30d, CO03FS0120 SS+6d, CO03FS0120 FF+6d |  |  |  |  | 88d | 0d |  |  | EBWK 6 Day Egypt Holidays |  | 2006-07-29 | 130 | 0 | 0 | CK200 | P0130 | 0 | 03 | CO | 1P2 | 03F | P0 | P | C | C |  |  |  |  |  | 34 | 21 | L4 |
| CO03AP0130 |  | 03A LB Pipe Erection |  | 34d | 2007-06-28 | 2007-08-06 | CO03AM0110 FF+24d, CK03AP0110, CO03AV1110 FF+10d, PK000PTA0K FS+30d, EM03API138 FS+30d, EM03ASY272 FS+30d, CO03AS0120 SS+6d, CO03AS0120 FF+6d |  |  |  |  | 56d | 0d |  |  | EBWK 6 Day Egypt Holidays |  | 2006-07-29 | 130 | 0 | 0 | 03A | P0130 | 1 | 03 | CO | 1P2 | 03A | P0 | P | C | C |  |  |  |  |  | 34 | 21 | L4 |
| CO03CP0130 |  | 03C LB Pipe Erection |  | 34d | 2007-06-28 | 2007-08-06 | CO03CM0110, CO03CM0150, CK03CP0110, CO03CV1110 FF+10d, PK000PTA0K FS+30d, EM03CPI138 FS+30d, EM03CSY272 FS+30d, CO03CS0120 SS+6d, CO03CS0120 FF+6d |  |  |  |  | 87d | 0d |  |  | EBWK 6 Day Egypt Holidays |  | 2006-07-29 | 130 | 0 | 0 | 03C | P0130 | 8 | 03 | CO | 1P2 | 03C | P0 | P | C | C |  |  |  |  |  | 34 | 21 | L4 |
| CO03EP0130 |  | 03E LB Pipe Erection |  | 54d | 2007-06-28 | 2007-08-29 | CO03EM0110 FF+24d, CK03EP0110, CO03EV1110 FF+10d, PK000PTA0K FS+30d, EM03EPI138 FS+30d, EM03ESY272 FS+30d, CO03ES0120 SS+6d, CO03ES0120 FF+6d |  |  |  |  | 58d | 0d |  |  | EBWK 6 Day Egypt Holidays |  | 2006-07-29 | 130 | 0 | 0 | 03E | P0130 | 30 | 03 | CO | 1P2 | 03E | P0 | P | C | C |  |  |  |  |  | 54 | 21 | L4 |
| CO03FP0140 |  | 03F SB Pipe Erection |  | 34d | 2007-07-01 | 2007-08-08 | CO03FP0130 SS+6d, CO03FP0130 FF+6d, PK000PIA1P FF+72d |  |  |  |  | 88d | 0d |  |  | EBWK 6 Day Egypt Holidays |  | 2006-07-29 | 140 | 0 | 0 | CK200 | P0140 | 36 | 03 | CO | 1P3 | 03F | P0 | P | C | C |  |  |  |  |  | 34 | 21 |  |
| CO03YP0150 |  | 03Y Punchlist / Test Piping |  | 45d | 2007-07-02 | 2007-08-22 | CO03YP0140 SS, CO03YP0140 FF+6d, PO000P0020 FF+30d |  |  |  |  | 139d | 0d |  |  | EBWK 6 Day Egypt Holidays |  | 2006-07-29 | 150 | 0 | 0 | 03Y | P0150 | 11 | 03 | CO | 1P4 | 03Y | P0 | P | C | C |  |  |  |  |  |  |  |  |
| CO03AP0140 |  | 03A SB Pipe Erection |  | 34d | 2007-07-05 | 2007-08-13 | CO03AP0130 SS+6d, CO03AP0130 FF+6d, PK000PIA1P FF+72d |  |  |  |  | 56d | 0d |  |  | EBWK 6 Day Egypt Holidays |  | 2006-07-29 | 140 | 0 | 0 | 03A | P0140 | 1 | 03 | CO | 1P3 | 03A | P0 | P | C | C |  |  |  |  |  | 34 | 21 |  |
| CO03CP0140 |  | 03C SB Pipe Erection |  | 34d | 2007-07-05 | 2007-08-13 | CO03CP0130 SS+6d, CO03CP0130 FF+6d, CO03CS0120 FF, PK000PIA1P FF+72d, PO000EL000 FF+40d |  |  |  |  | 87d | 0d |  |  | EBWK 6 Day Egypt Holidays |  | 2006-07-29 | 140 | 0 | 0 | 03C | P0140 | 1 | 03 | CO | 1P3 | 03C | P0 | P | C | C |  |  |  |  |  | 34 | 21 |  |
| CO03EP0140 |  | 03E SB Pipe Erection |  | 54d | 2007-07-05 | 2007-09-05 | CO03EP0130 SS+6d, CO03EP0130 FF+6d, CO03ES0120 FF, PK000PIA1P FF+72d |  |  |  |  | 58d | 0d |  |  | EBWK 6 Day Egypt Holidays |  | 2006-07-29 | 140 | 7.5 | 0 | 03E | P0140 | -1 | 03 | CO | 1P3 | 03E | P0 | P | C | C |  |  | 49 | 54 | 59 | 54 | 21 |  |
| CO03DP0130 |  | 03D LB Pipe Erection |  | 17d | 2007-07-07 | 2007-07-25 | CO03DM0150, CK03DP0110, CO03DV1110, PK000PTA0K FS+30d, CO03DM0145 FF+18d, EM03DPI138 FS+30d, EM03DSY272 FS+30d, CO03DS0120 SS+6d, CO03DS0120 FF+6d |  |  |  |  | 98d | 1d |  |  | EBWK 6 Day Egypt Holidays |  | 2006-07-29 | 130 | 0 | 0 | 03D | P0130 | 22 | 03 | CO | 1P2 | 03D | P0 | P | C | C |  |  |  |  |  | 17 | 21 | L4 |
| CO03DP0140 |  | 03D SB Pipe Erection |  | 17d | 2007-07-15 | 2007-08-04 | CO03DP0130 SS+6d, CO03DP0130 FF+6d, CO03DS0120 FF, PK000PIA1P FF+72d |  |  |  |  | 97d | 0d |  |  | EBWK 6 Day Egypt Holidays |  | 2006-07-29 | 140 | 0 | 0 | 03D | P0140 | 30 | 03 | CO | 1P3 | 03D | P0 | P | C | C |  |  |  |  |  | 17 | 21 |  |
| CO03BP0130 |  | 03B LB Pipe Erection |  | 33d | 2007-07-28 | 2007-09-03 | CO03BM0110, CO03BM0150, CK03BP0110, CO03BV1110 FF+10d, PK000PTA0K FS+30d, EM03BPI138 FS+30d, EM03BSY272 FS+30d, CO03BS0120 SS+6d, CO03BS0120 FF+6d, CO03BC0140 FF |  |  |  |  | 138d | 0d | start on or after 2007-07-28 |  | EBWK 6 Day Egypt Holidays |  | 2006-07-29 | 130 | 0 | 0 | 03B | P0130 | -16 | 03 | CO | 1P2 | 03B | P0 | P | C | C |  |  |  |  |  | 33 | 21 | L5 |
| CO03FP0150 |  | 03F Punchlist / Test Piping |  | 17d | 2007-07-28 | 2007-08-15 | CO03FP0140 SS, CO03FP0140 FF+6d, PO000P0020 FF+30d |  |  |  |  | 88d | 0d |  |  | EBWK 6 Day Egypt Holidays |  | 2006-07-29 | 150 | 0 | 0 | CK200 | P0150 | 36 | 03 | CO | 1P4 | 03F | P0 | P | C | C |  |  |  |  |  |  |  |  |
| CO03AP0150 |  | 03A Punchlist / Test Piping |  | 17d | 2007-08-01 | 2007-08-20 | CO03AP0140 SS, CO03AP0140 FF+6d, PO000P0020 FF+30d |  |  |  |  | 62d | 0d |  |  | EBWK 6 Day Egypt Holidays |  | 2006-07-29 | 150 | 0 | 0 | 03A | P0150 | 1 | 03 | CO | 1P4 | 03A | P0 | P | C | C |  |  |  |  |  |  |  |  |
| CO03CP0150 |  | 03C Punchlist / Test Piping |  | 17d | 2007-08-01 | 2007-08-20 | CO03CP0140 SS, CO03CP0140 FF+6d, PO000P0020 FF+30d |  |  |  |  | 87d | 0d |  |  | EBWK 6 Day Egypt Holidays |  | 2006-07-29 | 150 | 0 | 0 | 03C | P0150 | 1 | 03 | CO | 1P4 | 03C | P0 | P | C | C |  |  |  |  |  |  |  |  |
| CO03DP0150 |  | 03D Punchlist / Test Piping |  | 8d | 2007-08-01 | 2007-08-11 | CO03DP0140 SS, CO03DP0140 FF+6d, PO000P0020 FF+30d |  |  |  |  | 97d | 0d |  |  | EBWK 6 Day Egypt Holidays |  | 2006-07-29 | 150 | 0 | 0 | 03D | P0150 | 30 | 03 | CO | 1P4 | 03D | P0 | P | C | C |  |  |  |  |  |  |  |  |
| CO03BP0140 |  | 03B SB Pipe Erection |  | 33d | 2007-08-04 | 2007-09-10 | CO03BP0130 SS+6d, CO03BP0130 FF+6d, PK000PIA1P FF+72d |  |  |  |  | 138d | 0d |  |  | EBWK 6 Day Egypt Holidays |  | 2006-07-29 | 140 | 0 | 0 | 03B | P0140 | -16 | 03 | CO | 1P3 | 03B | P0 | P | C | C |  |  |  |  |  | 33 | 21 |  |
| CO03EP0150 |  | 03E Punchlist / Test Piping |  | 27d | 2007-08-13 | 2007-09-12 | CO03EP0140 SS, CO03EP0140 FF+6d, PO000P0020 FF+30d |  |  |  |  | 58d | 0d |  |  | EBWK 6 Day Egypt Holidays |  | 2006-07-29 | 150 | 0 | 0 | 03E | P0150 | -1 | 03 | CO | 1P4 | 03E | P0 | P | C | C |  |  | 22 | 27 | 32 |  |  |  |
| CO03BP0150 |  | 03B Punchlist / Test Piping |  | 16d | 2007-08-30 | 2007-09-22 | CO03BP0140 SS, CO03BP0140 FF+6d, PO000P0020 FF+30d |  |  |  |  | 138d | 0d |  |  | EBWK 6 Day Egypt Holidays |  | 2006-07-29 | 150 | 0 | 0 | 03B | P0150 | -16 | 03 | CO | 1P4 | 03B | P0 | P | C | C |  |  |  |  |  |  |  |  |

Notes:
- CO03YP0130: P3 Activity Log Info: Plant L.O. thru start erection of pipe 58 / weeks
- CO03YP0140: P3 Activity Log Info: Plant L.O. thru start erection of pipe 58 / weeks
- CO03FP0130: P3 Activity Log Info: Plant L.O. thru start erection of pipe 58 / weeks
- CO03AP0130: P3 Activity Log Info: Plant L.O. thru start erection of pipe 58 / weeks
- CO03CP0130: P3 Activity Log Info: Plant L.O. thru start erection of pipe 58 / weeks
- CO03EP0130: P3 Activity Log Info: Plant L.O. thru start erection of pipe 58 / weeks
- CO03FP0140: P3 Activity Log Info: Plant L.O. thru start erection of pipe 58 / weeks
- CO03AP0140: P3 Activity Log Info: Plant L.O. thru start erection of pipe 58 / weeks
- CO03CP0140: P3 Activity Log Info: Plant L.O. thru start erection of pipe 58 / weeks
- CO03EP0140: P3 Activity Log Info: Plant L.O. thru start erection of pipe 58 / weeks
- CO03DP0130: P3 Activity Log Info: Plant L.O. thru start erection of pipe 58 / weeks
- CO03DP0140: P3 Activity Log Info: Plant L.O. thru start erection of pipe 58 / weeks
- CO03BP0130: P3 Activity Log Info: Plant L.O. thru start erection of pipe 58 / weeks
- CO03BP0140: P3 Activity Log Info: Plant L.O. thru start erection of pipe 58 / weeks

| ID | WBS | Activity | Type | Duration | Start | Finish | Predecessors | Total float | Free float | Calendar | Resources | zData Date | Sequence | PCA Criticality Index | PCA Duration Sensitivity | User Defined Field 1 | User Definer Field 2 | user_number1 | EB02 - UNIT | EB01 - RESP | EB06 - WORK OP | EB03 - AREA | EB05 - DISCIPLINE | EB04 - CLASS | EB11 - FLAG | EB00 - EPC | Optimistic Duration | Most Likely Duration | Pessimistic Duration | EB12 - TEMP | EB22 - Critical Actvities |
| --- | --- | --- | --- | --- | --- | --- | --- | --- | --- | --- | --- | --- | --- | --- | --- | --- | --- | --- | --- | --- | --- | --- | --- | --- | --- | --- | --- | --- | --- | --- | --- |
|  | E0 | **A/G Electrical** |  |  | 2007-06-16 | 2007-09-22 |  |  |  |  |  |  |  |  |  |  |  |  |  |  |  |  |  |  |  |  |  |  |  |  |  |
| CO03CE0110 |  | 03C Lighting JB's, Stands, Tray & Cable |  | 24d | 2007-06-16 | 2007-07-12 | PO000E0010 FS+30d, CO03CM0110, EM000ELEJ2 FF+30d, CO03CC0130 | 123d | 0d | EBWK 6 Day Egypt Holidays |  | 2006-07-29 | 110 | 0 | 0 | 03C | E0110 | 26 | 03 | CO | 1E2 | 03C | E0 | E | C | C |  |  |  |  |  |
| CO03DE0110 |  | 03D Lighting JB's, Stands, Tray & Cable |  | 36d | 2007-06-16 | 2007-07-26 | PO000E0010 FS+30d, CO03DM0145 FF+18d, EM000ELEJ2 FF+30d, CO03DC0130 | 105d | 0d | EBWK 6 Day Egypt Holidays |  | 2006-07-29 | 110 | 0 | 0 | 03D | E0110 | 26 | 03 | CO | 1E2 | 03D | E0 | E | C | C |  |  |  |  |  |
| CO03DE0130 |  | 03D Power/Control JB's, Tray, Cable, Termination |  | 17d | 2007-06-16 | 2007-07-04 | CO03DM0150 FF+24d, PO000E0010 FS+30d, CO03DC0130 | 131d | 31d | EBWK 6 Day Egypt Holidays |  | 2006-07-29 | 130 | 0 | 0 | 03D | E0130 | 26 | 03 | CO | 1E1 | 03D | E0 | E | C | C |  |  |  |  |  |
| CO03EE0110 |  | 03E Lighting JB's, Stands, Tray & Cable |  | 36d | 2007-06-16 | 2007-07-26 | PO000E0010 FS+30d, CO03EM0110, EM000ELEJ2 FF+30d, CO03EC0130 | 105d | 0d | EBWK 6 Day Egypt Holidays |  | 2006-07-29 | 110 | 0 | 0 | 03E | E0110 | 30 | 03 | CO | 1E2 | 03E | E0 | E | C | C |  |  |  |  |  |
| CO03FE0110 |  | 03F Lighting JB's, Stands, Tray & Cable |  | 36d | 2007-06-16 | 2007-07-26 | PO000E0010 FS+30d, CO03FM0110 SS+72d, CO03FC0130 | 111d | 0d | EBWK 6 Day Egypt Holidays |  | 2006-07-29 | 110 | 0 | 0 | CK200 | E0110 | 0 | 03 | CO | 1E2 | 03F | E0 | E | C | C |  |  |  |  |  |
| CO03YE0110 |  | 03Y Lighting JB's, Stands, Tray & Cable |  | 72d | 2007-06-16 | 2007-09-06 | PO000E0010 FS+30d, CO03YC0110, CO03YP0130 SS+36d, CO03YC0120, CO03YS0110, EM000ELEJ2 FF+30d, CO03YC0120 S1 | 162d | 115d | EBWK 6 Day Egypt Holidays |  | 2006-07-29 | 110 | 0 | 0 | 03Y | E0110 | 12 | 03 | CO | 1E2 | 03Y | E0 | E | C | C |  |  |  |  |  |
| CO03YE0130 |  | 03Y Power/Control JB's, Tray, Cable, Termination |  | 72d | 2007-06-16 | 2007-09-06 | CO03YC0110, CO03YP0130 SS+36d, PO000E0010 FS+30d, CO03YC0120, CO03YS0110, CO03YC0120 S1 | 32d | 0d | EBWK 6 Day Egypt Holidays |  | 2006-07-29 | 130 | 5 | 1.3 | 03Y | E0130 | 12 | 03 | CO | 1E1 | 03Y | E0 | E | C | C | 60 | 72 | 72 |  |  |
| WO030E0100 |  | 030 Above Ground Electrical | WBS summary | 81d | 2007-06-16 | 2007-09-22 | EK000YA000 | 153d | 469d | EBWK 6 Day Egypt Holidays | Aboveground Electrical - Construction [35377.1 h] | 2006-07-29 | P00 | 0 | 0 | 03A | E0P00 |  | 03 | CO | E00 | 030 | E0 | E | WC | C |  |  |  |  |  |
| CO03FE0130 |  | 03F Power/Control JB's, Tray, Cable, Termination |  | 34d | 2007-07-08 | 2007-08-15 | CO03FM0150 FF+24d, CO03FP0140 FF+6d, CO03FP0140 SS+6d, PO000E0010 FS+30d, CO03FC0130 | 97d | 0d | EBWK 6 Day Egypt Holidays |  | 2006-07-29 | 130 | 0 | 0 | CK200 | E0130 | 36 | 03 | CO | 1E1 | 03F | E0 | E | C | C |  |  |  |  |  |
| CO03AE0130 |  | 03A Power/Control JB's, Tray, Cable, Termination |  | 34d | 2007-07-12 | 2007-08-20 | CO03AP0140 FF+6d, PO000E0010 FS+30d, CO03AC0130 | 56d | 0d | EBWK 6 Day Egypt Holidays |  | 2006-07-29 | 130 | 0 | 0 | 03A | E0130 | 26 | 03 | CO | 1E1 | 03A | E0 | E | C | C |  |  |  |  |  |
| CO03BE0110 |  | 03B Lighting JB's, Stands, Tray & Cable |  | 18d | 2007-07-12 | 2007-08-01 | CO03BS0120, PO000E0010 FS+30d, EM000ELEJ2 FF+30d, CO03BC0130 | 187d | 0d | EBWK 6 Day Egypt Holidays |  | 2006-07-29 | 110 | 0 | 0 | 03B | E0110 | 5 | 03 | CO | 1E2 | 03B | E0 | E | C | C |  |  |  |  |  |
| CO03CE0130 |  | 03C Power/Control JB's, Tray, Cable, Termination |  | 34d | 2007-07-12 | 2007-08-20 | CO03CM0150 FF+24d, CO03CP0140 FF+6d, PO000E0010 FS+30d, CO03CC0130 | 87d | 0d | EBWK 6 Day Egypt Holidays |  | 2006-07-29 | 130 | 0 | 0 | 03C | E0130 | 26 | 03 | CO | 1E1 | 03C | E0 | E | C | C |  |  |  |  |  |
| CO03EE0130 |  | 03E Power/Control JB's, Tray, Cable, Termination |  | 54d | 2007-07-12 | 2007-09-12 | CO03EP0140 FF+6d, PO000E0010 FS+30d, CO03EC0130 | 61d | 0d | EBWK 6 Day Egypt Holidays |  | 2006-07-29 | 130 | 0.6 | 0 | 03E | E0130 | -1 | 03 | CO | 1E1 | 03E | E0 | E | C | C | 49 | 54 | 59 |  |  |
| CO03CE0120 |  | 03C Lighting Fixture Installation/Termination |  | 12d | 2007-07-14 | 2007-07-26 | CO03CE0110 | 123d | 52d | EBWK 6 Day Egypt Holidays |  | 2006-07-29 | 120 | 0 | 0 | 03C | E0120 | 26 | 03 | CO | 1E3 | 03C | E0 | E | C | C |  |  |  |  |  |
| CO03AE0110 |  | 03A Lighting JB's, Stands, Tray & Cable |  | 18d | 2007-07-19 | 2007-08-08 | CO03AS0120, PO000E0010 FS+30d, EM000ELEJ2 FF+30d, CO03AC0130 | 75d | 0d | EBWK 6 Day Egypt Holidays |  | 2006-07-29 | 110 | 0 | 0 | 03A | E0110 | 12 | 03 | CO | 1E2 | 03A | E0 | E | C | C |  |  |  |  |  |
| CO03DE0120 |  | 03D Lighting Fixture Installation/Termination |  | 18d | 2007-07-28 | 2007-08-16 | CO03DE0110 | 105d | 34d | EBWK 6 Day Egypt Holidays |  | 2006-07-29 | 120 | 0 | 0 | 03D | E0120 | 26 | 03 | CO | 1E3 | 03D | E0 | E | C | C |  |  |  |  |  |
| CO03EE0120 |  | 03E Lighting Fixture Installation/Termination |  | 18d | 2007-07-28 | 2007-08-16 | CO03EE0110 | 105d | 34d | EBWK 6 Day Egypt Holidays |  | 2006-07-29 | 120 | 0 | 0 | 03E | E0120 | 30 | 03 | CO | 1E3 | 03E | E0 | E | C | C |  |  |  |  |  |
| CO03FE0120 |  | 03F Lighting Fixture Installation/Termination |  | 18d | 2007-07-28 | 2007-08-16 | CO03FE0110 | 111d | 34d | EBWK 6 Day Egypt Holidays |  | 2006-07-29 | 120 | 0 | 0 | CK200 | E0120 | 0 | 03 | CO | 1E3 | 03F | E0 | E | C | C |  |  |  |  |  |
| CO03BE0120 |  | 03B Lighting Fixture Installation/Termination |  | 6d | 2007-08-02 | 2007-08-08 | CO03BE0110 | 187d | 41d | EBWK 6 Day Egypt Holidays |  | 2006-07-29 | 120 | 0 | 0 | 03B | E0120 | 5 | 03 | CO | 1E3 | 03B | E0 | E | C | C |  |  |  |  |  |
| CO03AE0120 |  | 03A Lighting Fixture Installation/Termination |  | 6d | 2007-08-09 | 2007-08-15 | CO03AE0110 | 75d | 35d | EBWK 6 Day Egypt Holidays |  | 2006-07-29 | 120 | 0 | 0 | 03A | E0120 | 12 | 03 | CO | 1E3 | 03A | E0 | E | C | C |  |  |  |  |  |
| CO03BE0130 |  | 03B Power/Control JB's, Tray, Cable, Termination |  | 33d | 2007-08-11 | 2007-09-22 | CO03BM0150 FF+24d, CO03BP0140 FF+6d, PO000E0010 FS+30d, CO03BC0130 | 138d | 0d | EBWK 6 Day Egypt Holidays |  | 2006-07-29 | 130 | 0 | 0 | 03B | E0130 | -16 | 03 | CO | 1E1 | 03B | E0 | E | C | C |  |  |  |  |  |
|  | I0 | **Instrumentation** |  |  | 2007-06-16 | 2008-02-16 |  |  |  |  |  |  |  |  |  |  |  |  |  |  |  |  |  |  |  |  |  |  |  |  |  |
| CO03YI0120 |  | 03Y Instrument JB's, Field Instr, Tray, Cable |  | 72d | 2007-06-16 | 2007-09-06 | PK020I131L, CO03YP0140 SS, CO03YP0140 FF+6d, EM020IC128 FS+30d, PK000I623L, PK000I616L, PK000I617L, PK000I611L, PK000I612L, PK000I621L, CO03YS0110, PK030I131L, PK030I611L, EM03YSY272 FS+30d, CO03YE0130 SS, EM020IC127 FS+40d, EM030IC125 FS+30d | 32d | 67d | EBWK 6 Day Egypt Holidays |  | 2006-07-29 | 120 | 5 | 2.2 | 03Y | I0120 | 12 | 03 | CO | 1I1 | 03Y | I0 | I | C | C | 60 | 72 | 84 |  |  |
| WO030I0100 |  | 030 Install Instruments & Test | WBS summary | 187d | 2007-06-16 | 2008-02-16 | EK000YA000 | 41d | 363d | EBWK 6 Day Egypt Holidays | Instrumentation and Control - Construction [5981.03 h] | 2006-07-29 | I00 | 0 | 0 | 03A | I0I00 |  | 03 | CO | I00 | 030 | I0 | I | WC | C |  |  |  |  |  |
| CO03FI0120 |  | 03F Instrument JB's, Field Instr, Tray, Cable |  | 34d | 2007-07-08 | 2007-08-15 | PK020I131L, CO03FP0140 SS, CO03FP0140 FF+6d, EM020IC128 FS+30d, PK000I623L, PK000I616L, PK000I617L, PK000I611L, PK000I612L, PK000I621L, PK030I131L, PK030I611L, EM03FSY272 FS+30d, CO03FE0130 SS, EM020IC127 FS+40d, EM030IC125 FS+30d | 97d | 98d | EBWK 6 Day Egypt Holidays |  | 2006-07-29 | 120 | 0 | 0 | CK200 | I0120 | 36 | 03 | CO | 1I1 | 03F | I0 | I | C | C |  |  |  |  |  |
| CO03AI0120 |  | 03A Instrument JB's, Field Instr, Tray, Cable |  | 34d | 2007-07-12 | 2007-08-20 | PK020I131L, CO03AP0140 SS, CO03AP0140 FF+6d, EM020IC128 FS+30d, PK000I623L, PK000I616L, PK000I617L, PK000I611L, PK000I612L, PK000I621L, PK030I131L, PK030I611L, EM03ASY272 FS+30d, CO03AE0130 SS, EM020IC127 FS+40d, EM030IC125 FS+30d | 56d | 91d | EBWK 6 Day Egypt Holidays |  | 2006-07-29 | 120 | 0 | 0 | 03A | I0120 | 26 | 03 | CO | 1I1 | 03A | I0 | I | C | C |  |  |  |  |  |
| CO03CI0120 |  | 03C Instrument JB's, Field Instr, Tray, Cable |  | 34d | 2007-07-12 | 2007-08-20 | PK020I131L, CO03CP0140 SS, CO03CP0140 FF+6d, EM020IC128 FS+30d, PK000I623L, PK000I616L, PK000I617L, PK000I611L, PK000I612L, PK000I621L, PK030I131L, PK030I611L, EM03CSY272 FS+30d, CO03CE0130 SS, EM020IC127 FS+40d, EM030IC125 FS+30d | 87d | 106d | EBWK 6 Day Egypt Holidays |  | 2006-07-29 | 120 | 0 | 0 | 03C | I0120 | 26 | 03 | CO | 1I1 | 03C | I0 | I | C | C |  |  |  |  |  |
| CO03EI0120 |  | 03E Instrument JB's, Field Instr, Tray, Cable |  | 54d | 2007-07-12 | 2007-09-12 | PK020I131L, CO03EP0140 SS, CO03EP0140 FF+6d, EM020IC128 FS+30d, PK000I623L, PK000I616L, PK000I617L, PK000I611L, PK000I612L, PK000I621L, PK030I131L, PK030I611L, EM03ESY272 FS+30d, CO03EE0130 SS, EM020IC127 FS+40d, EM030IC125 FS+30d | 61d | 93d | EBWK 6 Day Egypt Holidays |  | 2006-07-29 | 120 | 0.6 | 0 | 03E | I0120 | -1 | 03 | CO | 1I1 | 03E | I0 | I | C | C | 49 | 54 | 60 |  |  |
| CO03DI0120 |  | 03D Instrument JB's, Field Instr, Tray, Cable |  | 17d | 2007-07-22 | 2007-08-11 | PK020I131L, CO03DP0140 SS, CO03DP0140 FF+6d, EM020IC128 FS+30d, PK000I623L, PK000I616L, PK000I617L, PK000I611L, PK000I612L, PK000I621L, PK030I131L, PK030I611L, EM03DSY272 FS+30d, CO03DE0130 SS, EM020IC127 FS+40d, EM030IC125 FS+30d | 100d | 117d | EBWK 6 Day Egypt Holidays |  | 2006-07-29 | 120 | 0 | 0 | 03D | I0120 | 30 | 03 | CO | 1I1 | 03D | I0 | I | C | C |  |  |  |  |  |
| CO03BI0120 |  | 03B Instrument JB's, Field Instr, Tray, Cable |  | 33d | 2007-08-11 | 2007-09-22 | PK020I131L, CO03BP0140 SS, CO03BP0140 FF+6d, EM020IC128 FS+30d, PK000I623L, PK000I616L, PK000I617L, PK000I611L, PK000I612L, PK000I621L, PK030I131L, PK030I611L, EM03BSY272 FS+30d, CO03BE0130 SS, EM020IC127 FS+40d, EM030IC125 FS+30d | 138d | 79d | EBWK 6 Day Egypt Holidays |  | 2006-07-29 | 120 | 0 | 0 | 03B | I0120 | -16 | 03 | CO | 1I1 | 03B | I0 | I | C | C |  |  |  |  |  |
| CO03DI0130 |  | 03D Install In Line Instruments |  | 2d | 2007-08-11 | 2007-08-13 | CO03DP0150 | 97d | 114d | EBWK 6 Day Egypt Holidays |  | 2006-07-29 | 130 | 0 | 0 | 03D | I0130 | 30 | 03 | CO | 1I2 | 03D | I0 | I | C | C |  |  |  |  |  |
| CO03FI0130 |  | 03F Install In Line Instruments |  | 3d | 2007-08-16 | 2007-08-19 | CO03FP0150 | 97d | 99d | EBWK 6 Day Egypt Holidays |  | 2006-07-29 | 130 | 0 | 0 | CK200 | I0130 | 36 | 03 | CO | 1I2 | 03F | I0 | I | C | C |  |  |  |  |  |
| CO03AI0130 |  | 03A Install In Line Instruments |  | 3d | 2007-08-21 | 2007-08-23 | CO03AP0150 | 62d | 97d | EBWK 6 Day Egypt Holidays |  | 2006-07-29 | 130 | 0 | 0 | 03A | I0130 | 1 | 03 | CO | 1I2 | 03A | I0 | I | C | C |  |  |  |  |  |
| CO03CI0130 |  | 03C Install In Line Instruments |  | 3d | 2007-08-21 | 2007-08-23 | CO03CP0150 | 87d | 107d | EBWK 6 Day Egypt Holidays |  | 2006-07-29 | 130 | 0 | 0 | 03C | I0130 | 1 | 03 | CO | 1I2 | 03C | I0 | I | C | C |  |  |  |  |  |
| CO03YI0130 |  | 03Y Install In Line Instruments |  | 24d | 2007-08-23 | 2007-09-26 | CO03YP0150 | 139d | 98d | EBWK 6 Day Egypt Holidays |  | 2006-07-29 | 130 | 0 | 0 | 03Y | I0130 | 11 | 03 | CO | 1I2 | 03Y | I0 | I | C | C |  |  |  |  |  |
| CO03EI0130 |  | 03E Install In Line Instruments |  | 5d | 2007-09-15 | 2007-09-24 | CO03EP0150 | 65d | 98d | EBWK 6 Day Egypt Holidays |  | 2006-07-29 | 130 | 0 | 1.8 | 03E | I0130 | -1 | 03 | CO | 1I2 | 03E | I0 | I | C | C | 4 | 5 | 6 |  |  |
| CO03BI0130 |  | 03B Install In Line Instruments |  | 3d | 2007-09-24 | 2007-09-29 | CO03BP0150 | 138d | 79d | EBWK 6 Day Egypt Holidays |  | 2006-07-29 | 130 | 0 | 0 | 03B | I0130 | -16 | 03 | CO | 1I2 | 03B | I0 | I | C | C |  |  |  |  |  |
| CO03AI0140 |  | 03A Continuity Testing |  | 3d | 2008-01-06 | 2008-01-08 | CO03AI0120 SS, CO03AI0120 FF+6d, CO01GI0120, SC01GT0120 | -35d | 0d | EBWK 6 Day Egypt Holidays |  | 2006-07-29 | 140 | 48.9 | 4.9 | 03A | I0140 | 12 | 03 | CO | 1I3 | 03A | I0 | I | C | C | 2 | 3 | 4 | L2 | C3 |
| CO03YI0140 |  | 03Y Continuity Testing |  | 36d | 2008-01-06 | 2008-02-16 | CO03YI0120 SS, CO03YI0120 FF+6d, CO01GI0120 | 41d | 0d | EBWK 6 Day Egypt Holidays |  | 2006-07-29 | 140 | 0 | 0 | 03Y | I0140 | 12 | 03 | CO | 1I3 | 03Y | I0 | I | C | C |  |  |  |  |  |
| CO03FI0140 |  | 03F Continuity Testing |  | 3d | 2008-01-09 | 2008-01-12 | CO03FI0120 SS, CO03FI0120 FF+6d, CO01GI0120 FS+3d | -1d | 0d | EBWK 6 Day Egypt Holidays |  | 2006-07-29 | 140 | 0 | 0 | CK200 | I0140 | 21 | 03 | CO | 1I3 | 03F | I0 | I | C | C | 2 | 3 | 4 |  | C5 |
| CO03BI0140 |  | 03B Continuity Testing |  | 3d | 2008-01-20 | 2008-01-22 | CO03BI0120 SS, CO03BI0120 FF+6d, CO01GI0120 FS+12d | 59d | 0d | EBWK 6 Day Egypt Holidays |  | 2006-07-29 | 140 | 0 | 0 | 03B | I0140 | 12 | 03 | CO | 1I3 | 03B | I0 | I | C | C |  |  |  |  |  |
| CO03CI0140 |  | 03C Continuity Testing |  | 3d | 2008-01-23 | 2008-01-26 | CO03CI0120 SS, CO03CI0120 FF+6d, CO01GI0120 FS+15d | -19d | 0d | EBWK 6 Day Egypt Holidays |  | 2006-07-29 | 140 | 0 | 0 | 03C | I0140 | 12 | 03 | CO | 1I3 | 03C | I0 | I | C | C | 2 | 3 | 4 |  | C5 |
| CO03DI0140 |  | 03D Continuity Testing |  | 2d | 2008-01-27 | 2008-01-28 | CO03DI0120 SS, CO03DI0120 FF+6d, CO01GI0120 FS+18d | -17d | 0d | EBWK 6 Day Egypt Holidays |  | 2006-07-29 | 140 | 0 | 0 | 03D | I0140 | 12 | 03 | CO | 1I3 | 03D | I0 | I | C | C | 1 | 2 | 3 |  | C5 |
| CO03EI0140 |  | 03E Continuity Testing |  | 5d | 2008-01-29 | 2008-02-03 | CO03EI0120 SS, CO03EI0120 FF+6d, CO01GI0120 FS+20d | -32d | 0d | EBWK 6 Day Egypt Holidays |  | 2006-07-29 | 140 | 0.6 | 0 | 03E | I0140 | 12 | 03 | CO | 1I3 | 03E | I0 | I | C | C | 4 | 5 | 6 |  | C4 |

| ID | WBS | Activity | Type | Duration | Start | Finish | Predecessors | Complete | Remaining | Planned start | Planned finish | Total float | Free float | Expected finish | Calendar | Resources | zData Date | Sequence | PCA Criticality Index | PCA Duration Sensitivity | User Defined Field 1 | User Definer Field 2 | user_number1 | EB02 - UNIT | EB01 - RESP | EB06 - WORK OP | EB03 - AREA | EB05 - DISCIPLINE | EB04 - CLASS | EB00 - EPC | EB11 - FLAG | Optimistic Duration | Most Likely Duration | Pessimistic Duration |
| --- | --- | --- | --- | --- | --- | --- | --- | --- | --- | --- | --- | --- | --- | --- | --- | --- | --- | --- | --- | --- | --- | --- | --- | --- | --- | --- | --- | --- | --- | --- | --- | --- | --- | --- |
|  | V1 | **Painting** |  |  | 2006-11-23 | 2007-09-22 |  |  |  |  |  |  |  |  |  |  |  |  |  |  |  |  |  |  |  |  |  |  |  |  |  |  |  |  |
| CO03AV1110 |  | 03A Paint Fabricated Pipe Spools |  | 10d | 2006-11-23 A | 2007-04-09 | CK03AU4110 SS+18d, CK03AU4110 FF+12d, PO000V1005, CK03AP0110 FF+6d |  | 10d | 2007-01-23 | 2007-02-03 | 148d | 92d |  | EBWK 6 Day Egypt Holidays |  | 2006-07-29 | 110 | 0 | 0 | 03A | V1110 | 0 | 03 | CO | 1V1 | 03A | V1 | V | C |  |  |  |  |
| CO03BV1110 |  | 03B Paint Fabricated Pipe Spools |  | 10d | 2006-11-23 A | 2007-05-15 | CK03BU4110 SS+18d, CK03BU4110 FF+12d, PO000V1005, CK03BP0110 FF+6d |  | 10d | 2007-01-23 | 2007-02-03 | 223d | 85d |  | EBWK 6 Day Egypt Holidays |  | 2006-07-29 | 110 | 0 | 0 | 03B | V1110 | 0 | 03 | CO | 1V1 | 03B | V1 | V | C |  |  |  |  |
| CO03CV1110 |  | 03C Paint Fabricated Pipe Spools |  | 10d | 2006-11-23 A | 2007-03-26 | CK03CU4110 SS+18d, CK03CU4110 FF+12d, PO000V1005, CK03CP0110 FF+6d |  | 10d | 2007-01-23 | 2007-02-03 | 191d | 104d |  | EBWK 6 Day Egypt Holidays |  | 2006-07-29 | 110 | 0 | 0 | 03C | V1110 | 0 | 03 | CO | 1V1 | 03C | V1 | V | C |  |  |  |  |
| CO03DV1110 |  | 03D Paint Fabricated Pipe Spools |  | 5d | 2006-11-23 A | 2007-04-10 | CK03DU4110 SS+18d, CK03DU4110 FF+12d, PO000V1005, CK03DP0110 FF+6d |  | 5d | 2007-01-29 | 2007-02-03 | 172d | 74d |  | EBWK 6 Day Egypt Holidays |  | 2006-07-29 | 110 | 0 | 0 | 03D | V1110 | 0 | 03 | CO | 1V1 | 03D | V1 | V | C |  |  |  |  |
| CO03EV1110 |  | 03E Paint Fabricated Pipe Spools |  | 16d | 2006-11-23 A | 2007-04-08 | CK03EU4110 SS+18d, CK03EU4110 FF+12d, PO000V1005, CK03EP0110 FF+6d |  | 16d | 2007-01-16 | 2007-02-03 | 171d | 113d |  | EBWK 6 Day Egypt Holidays |  | 2006-07-29 | 110 | 0 | 0 | 03E | V1110 | 0 | 03 | CO | 1V1 | 03E | V1 | V | C |  |  |  |  |
| CO03FV1110 |  | 03F Paint Fabricated Pipe Spools |  | 10d | 2006-11-23 A | 2007-04-01 | CK03FU4110 SS+18d, CK03FU4110 FF+12d, PO000V1005, CK03FP0110 FF+6d |  | 10d | 2007-01-23 | 2007-02-03 | 183d | 95d |  | EBWK 6 Day Egypt Holidays |  | 2006-07-29 | 110 | 0 | 0 | CK200 | V1110 | 0 | 03 | CO | 1V1 | 03F | V1 | V | C |  |  |  |  |
| WO030V1100 |  | 030 Paint | WBS summary | 233d | 2006-11-23 A | 2007-09-22 | EK000YA000 | 20% | 187d | 2006-12-13 | 2007-09-22 | 153d | 469d |  | EBWK 6 Day Egypt Holidays | Insulation - Construction [15953.9 h] | 2006-07-29 | V10 | 0 | 0 | 03A | V1V10 |  | 03 | CO | V10 | 030 | V1 | V | C | WC |  |  |  |
| CO03YV1110 |  | 03Y Paint Fabricated Pipe Spools |  | 48d | 2006-12-13 A | 2007-03-15 | PO000V1005, CK03YP0110 SS+6d, CK03YP0110 FF+6d | 42% | 28d | 2006-12-13 | 2007-02-13 | 154d | 0d | 2007-02-13 | EBWK 6 Day Egypt Holidays |  | 2006-07-29 | 110 | 0 | 0 | 03Y | V1110 | -20 | 03 | CO | 1V1 | 03Y | V1 | V | C |  |  |  |  |
| CO03FV1130 |  | 03F Paint Touch-up - Equipment |  | 10d | 2007-04-16 | 2007-04-26 | CO03FM0150 FF+12d, PO000V1005, CO03FM0150 SS+12d |  |  |  |  | 183d | 48d |  | EBWK 6 Day Egypt Holidays |  | 2006-07-29 | 130 | 0 | 0 | CK200 | V1130 | 0 | 03 | CO | 1V3 | 03F | V1 | V | C |  |  |  |  |
| CO03CV1130 |  | 03C Paint Touch-up - Equipment |  | 10d | 2007-04-23 | 2007-05-05 | CO03CM0150 FF+12d, PO000V1005 |  |  |  |  | 195d | 205d |  | EBWK 6 Day Egypt Holidays |  | 2006-07-29 | 130 | 0 | 0 | 03C | V1130 | 8 | 03 | CO | 1V3 | 03C | V1 | V | C |  |  |  |  |
| CO03DV1130 |  | 03D Paint Touch-up - Equipment (& 2002-F Tank) |  | 5d | 2007-05-06 | 2007-05-12 | CO03DM0150 FF+12d, PO000V1005, CO03DM0145 |  |  |  |  | 189d | 201d |  | EBWK 6 Day Egypt Holidays |  | 2006-07-29 | 130 | 0 | 0 | 03D | V1130 | 22 | 03 | CO | 1V3 | 03D | V1 | V | C |  |  |  |  |
| CO03BV1130 |  | 03B Paint Touch-up - Equipment |  | 10d | 2007-05-19 | 2007-05-29 | CO03BM0150 FF+12d, PO000V1005, CO03BM0110, CO03BC0140 |  |  |  |  | 248d | 180d |  | EBWK 6 Day Egypt Holidays |  | 2006-07-29 | 130 | 0 | 0 | 03B | V1130 | -16 | 03 | CO | 1V3 | 03B | V1 | V | C |  |  |  |  |
| CO03YV1120 |  | 03Y Paint Touch-up - Piping |  | 48d | 2007-06-28 | 2007-08-22 | CO03YP0140 FF+6d |  |  |  |  | 175d | 128d |  | EBWK 6 Day Egypt Holidays |  | 2006-07-29 | 120 | 0 | 0 | 03Y | V1120 | 11 | 03 | CO | 1V2 | 03Y | V1 | V | C |  |  |  |  |
| CO03FV1120 |  | 03F Paint Touch-up - Piping |  | 10d | 2007-08-05 | 2007-08-15 | CO03FP0140 FF+6d, CO03FP0140 SS+6d |  |  |  |  | 112d | 104d |  | EBWK 6 Day Egypt Holidays |  | 2006-07-29 | 120 | 0 | 0 | CK200 | V1120 | 36 | 03 | CO | 1V2 | 03F | V1 | V | C |  |  |  |  |
| CO03DV1120 |  | 03D Paint Touch-up - Piping |  | 5d | 2007-08-05 | 2007-08-11 | CO03DP0140 FF+6d |  |  |  |  | 111d | 123d |  | EBWK 6 Day Egypt Holidays |  | 2006-07-29 | 120 | 0 | 0 | 03D | V1120 | 30 | 03 | CO | 1V2 | 03D | V1 | V | C |  |  |  |  |
| CO03AV1120 |  | 03A Paint Touch-up - Piping |  | 10d | 2007-08-09 | 2007-08-20 | CO03AP0140 FF+6d |  |  |  |  | 58d | 0d |  | EBWK 6 Day Egypt Holidays |  | 2006-07-29 | 120 | 0 | 0 | 03A | V1120 | 1 | 03 | CO | 1V2 | 03A | V1 | V | C |  |  |  |  |
| CO03AV1130 |  | 03A Paint Touch-up - Equipment |  | 10d | 2007-08-09 | 2007-08-20 | PO000V1005, CO03AM0110, CO03AV1120 SS |  |  |  |  | 58d | 0d |  | EBWK 6 Day Egypt Holidays |  | 2006-07-29 | 130 | 0 | 0 | 03A | V1130 | 1 | 03 | CO | 1V3 | 03A | V1 | V | C |  |  |  |  |
| CO03CV1120 |  | 03C Paint Touch-up - Piping |  | 10d | 2007-08-09 | 2007-08-20 | CO03CP0140 FF+6d |  |  |  |  | 102d | 112d |  | EBWK 6 Day Egypt Holidays |  | 2006-07-29 | 120 | 0 | 0 | 03C | V1120 | 1 | 03 | CO | 1V2 | 03C | V1 | V | C |  |  |  |  |
| CO03EV1120 |  | 03E Paint Touch-up - Piping |  | 16d | 2007-08-26 | 2007-09-12 | CO03EP0140 FF+6d |  |  |  |  | 58d | 0d |  | EBWK 6 Day Egypt Holidays |  | 2006-07-29 | 120 | 7 | 0 | 03E | V1120 | -1 | 03 | CO | 1V2 | 03E | V1 | V | C |  | 15 | 16 | 20 |
| CO03EV1130 |  | 03E Paint Touch-up - Equipment |  | 16d | 2007-08-26 | 2007-09-12 | PO000V1005, CO03EV1120 SS |  |  |  |  | 58d | 0d |  | EBWK 6 Day Egypt Holidays |  | 2006-07-29 | 130 | 7 | 0 | 03E | V1130 | -1 | 03 | CO | 1V3 | 03E | V1 | V | C |  | 15 | 16 | 20 |
| CO03BV1120 |  | 03B Paint Touch-up - Piping |  | 10d | 2007-09-06 | 2007-09-22 | CO03BP0140 FF+6d |  |  |  |  | 153d | 85d |  | EBWK 6 Day Egypt Holidays |  | 2006-07-29 | 120 | 0 | 0 | 03B | V1120 | -16 | 03 | CO | 1V2 | 03B | V1 | V | C |  |  |  |  |
|  | V2 | **Insulation** |  |  | 2007-07-05 | 2007-11-01 |  |  |  |  |  |  |  |  |  |  |  |  |  |  |  |  |  |  |  |  |  |  |  |  |  |  |  |  |
| CO03FV2110 |  | 03F Insulate - Equipment |  | 13d | 2007-07-05 | 2007-07-19 | CO03FM0110 FF+24d, CO03FV1130 FF+24d, PO000V2005 FF+30d, CO03FV1130 SS+12d |  |  |  |  | 135d | 137d |  | EBWK 6 Day Egypt Holidays |  | 2006-07-29 | 110 | 0 | 0 | CK200 | V2110 | 0 | 03 | CO | 1V5 | 03F | V2 | V | C |  |  |  |  |
| WO030V2100 |  | 030 Insulation | WBS summary | 84d | 2007-07-05 | 2007-11-01 | EK000YA000 |  |  |  |  | 133d | 449d |  | EBWK 6 Day Egypt Holidays | Insulation - Construction [7421.95 h] | 2006-07-29 | V20 | 0 | 0 | 03A | V2V20 |  | 03 | CO | V20 | 030 | V2 | V | C | WC |  |  |  |
| CO03YV2120 |  | 03Y Insulate - Piping |  | 48d | 2007-07-30 | 2007-10-03 | CO03YP0150 SS+24d, CO03YP0150 FF+24d, PO000V2005 FF+30d |  |  |  |  | 148d | 107d |  | EBWK 6 Day Egypt Holidays |  | 2006-07-29 | 120 | 0 | 0 | 03Y | V2120 | 11 | 03 | CO | 1V6 | 03Y | V2 | V | C |  |  |  |  |
| CO03AV2120 |  | 03A Insulate - Piping |  | 13d | 2007-08-15 | 2007-08-29 | CO03AP0150 SS+12d, CO03AP0150 FF, PO000V2005 FF+30d |  |  |  |  | 63d | 98d |  | EBWK 6 Day Egypt Holidays |  | 2006-07-29 | 120 | 0 | 0 | 03A | V2120 | 0 | 03 | CO | 1V6 | 03A | V2 | V | C |  |  |  |  |
| CO03AV2110 |  | 03A Insulate - Equipment |  | 13d | 2007-08-21 | 2007-09-04 | CO03AV1130, PO000V2005 FF+30d, CO03AM0110 |  |  |  |  | 58d | 93d |  | EBWK 6 Day Egypt Holidays |  | 2006-07-29 | 110 | 0 | 0 | 03A | V2110 | 0 | 03 | CO | 1V5 | 03A | V2 | V | C |  |  |  |  |
| CO03FV2120 |  | 03F Insulate - Piping |  | 13d | 2007-08-29 | 2007-09-12 | CO03FP0150 SS+24d, CO03FP0150 FF+24d, PO000V2005 FF+30d |  |  |  |  | 88d | 90d |  | EBWK 6 Day Egypt Holidays |  | 2006-07-29 | 120 | 0 | 0 | CK200 | V2120 | 36 | 03 | CO | 1V6 | 03F | V2 | V | C |  |  |  |  |
| CO03EV2110 |  | 03E Insulate - Equipment |  | 22d | 2007-09-19 | 2007-11-01 | CO03EM0110 FF+24d, CO03EV1130 FF+24d, PO000V2005 FF+30d |  |  |  |  | 58d | 91d |  | EBWK 6 Day Egypt Holidays |  | 2006-07-29 | 110 | 7 | 0 | 03E | V2110 | -1 | 03 | CO | 1V5 | 03E | V2 | V | C |  | 20 | 22 | 25 |
| CO03EV2120 |  | 03E Insulate - Piping |  | 22d | 2007-09-19 | 2007-11-01 | CO03EP0150 SS+24d, CO03EP0150 FF+24d, PO000V2005 FF+30d |  |  |  |  | 58d | 91d |  | EBWK 6 Day Egypt Holidays |  | 2006-07-29 | 120 | 0 | 7.7 | 03E | V2120 | -1 | 03 | CO | 1V6 | 03E | V2 | V | C |  | 20 | 22 | 25 |

| ID | WBS | Activity | Type | Duration | Start | Finish | Predecessors | Total float | Free float | Calendar | Resources | zData Date | Sequence | PCA Criticality Index | PCA Duration Sensitivity | User Defined Field 1 | User Definer Field 2 | user_number1 | EB02 - UNIT | EB01 - RESP | EB06 - WORK OP | EB03 - AREA | EB05 - DISCIPLINE | EB04 - CLASS | EB00 - EPC | EB11 - FLAG | EB19 - System | EB12 - TEMP | EB22 - Critical Actvities | EB09 - IPMS |
| --- | --- | --- | --- | --- | --- | --- | --- | --- | --- | --- | --- | --- | --- | --- | --- | --- | --- | --- | --- | --- | --- | --- | --- | --- | --- | --- | --- | --- | --- | --- |
|  | K0 | **Site Prep** |  |  | 2007-12-01 | 2008-03-31 |  |  |  |  |  |  |  |  |  |  |  |  |  |  |  |  |  |  |  |  |  |  |  |  |
| CO030K0100 |  | 030 Site Prep - Guard Posts & Gravel |  | 100d | 2007-12-01 | 2008-03-31 | CO000K0110, CO03AC0130 FF, CO03BC0130 FF, CO03CC0130 FF, CO03DC0130 FF, CO03EC0130 FF, CO03FC0130 FF, CO010K0130 SS, CO03YC0120 FF | 9d | 60d | EBWK 6 Day Egypt Holidays |  | 2006-07-29 | 130 | 0 | 0 | 03E | C0130 | 30 | 03 | CO | 1K0 | 030 | K0 | K | C |  |  |  |  |  |
| WO030K0100 |  | 030 Site Prep | WBS summary | 100d | 2007-12-01 | 2008-03-31 | EK000YA002 | 9d | 325d | EBWK 6 Day Egypt Holidays | Site Preparation/ Other Civil - Construction [3162.15 h] | 2006-07-29 | 130 | 0 | 0 | 03E | C0130 |  | 03 | CO | K00 | 030 | K0 | K | C | WC |  |  |  |  |
|  | T0 | **Mechanical Completion** |  |  | 2007-03-28 | 2008-02-23 |  |  |  |  |  |  |  |  |  |  |  |  |  |  |  |  |  |  |  |  |  |  |  |  |
| CO03UDT110 |  | 03U Mechanical Completion | milestone | 0d | 2007-03-28 | 2007-03-28 | CO03UP0150 FF, CO03AU4120, CO03BU4120, CO03CU4120, CO03DU4120, CO03EU4120, CO03FU4120 | 301d | 0d | EBWK 6 Day Egypt Holidays |  | 2006-07-29 | 110 | 0 | 0 | 01D | T0110 | 9 | 03 | CO | 1T1 | 03U | T0 | T | C | C | 03U |  |  |  |
| SC03UT0120 |  | 03U RFSU | milestone | 0d | 2007-03-28 | 2007-03-28 | CO03UDT110 FF | 380d | 439d | EBWK 7 Day No Holidays |  | 2006-07-29 | 120 | 0 | 0 | 03U | T0120 |  | 03 | SC | 000 | 03U | T0 | T | S | C | 03U |  |  |  |
| CO03AT0110 |  | 03A Mechanical Completion | milestone | 0d | 2008-01-08 | 2008-01-08 | CO03AE0120 FF, CO03AE0130 FF, CO03AI0140 FF, CO03AP0150 FF, CO03AV1120 FF, CO03AV1130 FF | -26d | 9d | EBWK 6 Day Egypt Holidays |  | 2006-07-29 | 110 | 48.9 | 0 | 03A | T0110 | 12 | 03 | CO | 1T1 | 03A | T0 | T | C | C |  | L2 | C3 |  |
| CO03FT0110 |  | 03F Mechanical Completion | milestone | 0d | 2008-01-12 | 2008-01-12 | CO03FE0120 FF, CO03FE0130 FF, CO03FI0140 FF, CO03FP0150 FF, CO03FV1120 FF, CO03FV1130 FF | 8d | 10d | EBWK 6 Day Egypt Holidays |  | 2006-07-29 | 110 | 0 | 0 | CK200 | T0110 | 21 | 03 | CO | 1T1 | 03F | T0 | T | C | C |  |  |  |  |
| SC03AT0120 |  | 03A RFSU | milestone | 0d | 2008-01-19 | 2008-01-19 | SC03AI0150 FF, CO03AV2110, CO03AV2120 FF, CO03AT0110 FF | -47d | 0d | EBWK 7 Day No Holidays |  | 2006-07-29 | 120 | 0 | 0 | 03A | T0120 |  | 03 | SC | 000 | 03A | T0 | T | S | C |  | L2 |  |  |
| CO03BT0110 |  | 03B Mechanical Completion | milestone | 0d | 2008-01-22 | 2008-01-22 | CO03BE0120 FF, CO03BE0130 FF, CO03BI0140 FF, CO03BP0150 FF, CO03BV1120 FF, CO03BV1130 FF | 68d | 9d | EBWK 6 Day Egypt Holidays |  | 2006-07-29 | 110 | 0 | 0 | 03B | T0110 | 12 | 03 | CO | 1T1 | 03B | T0 | T | C | C |  |  |  |  |
| SC03FT0120 |  | 03F RFSU | milestone | 0d | 2008-01-23 | 2008-01-23 | SC03FI0150 FF, CO03FV2110, CO03FV2120 FF, CO03FT0110 FF | -2d | 45d | EBWK 7 Day No Holidays |  | 2006-07-29 | 120 | 0 | 0 | CK200 | T0120 |  | 03 | SC | 000 | 03F | T0 | T | S | C |  |  |  |  |
| CO03CT0110 |  | 03C Mechanical Completion | milestone | 0d | 2008-01-26 | 2008-01-26 | CO03CE0120 FF, CO03CE0130 FF, CO03CI0140 FF, CO03CP0150 FF, CO03CV1120 FF, CO03CV1130 FF | -10d | 7d | EBWK 6 Day Egypt Holidays |  | 2006-07-29 | 110 | 0 | 0 | 03C | T0110 | 12 | 03 | CO | 1T1 | 03C | T0 | T | C | C |  |  |  |  |
| CO03DT0110 |  | 03D Mechanical Completion | milestone | 0d | 2008-01-28 | 2008-01-28 | CO03DE0120 FF, CO03DE0130 FF, CO03DI0140 FF, CO03DP0150 FF, CO03DV1120 FF, CO03DV1130 FF | -12d | 5d | EBWK 6 Day Egypt Holidays |  | 2006-07-29 | 110 | 0 | 0 | 03D | T0110 | 12 | 03 | CO | 1T1 | 03D | T0 | T | C | C |  |  |  |  |
| SC03BT0120 |  | 03B RFSU | milestone | 0d | 2008-02-02 | 2008-02-02 | SC03BI0150 FF, CO03BT0110 FF | 69d | 128d | EBWK 7 Day No Holidays |  | 2006-07-29 | 120 | 0 | 0 | 03B | T0120 |  | 03 | SC | 000 | 03B | T0 | T | S | C |  |  |  |  |
| CO03ET0110 |  | 03E Mechanical Completion | milestone | 0d | 2008-02-03 | 2008-02-03 | CO03EE0120 FF, CO03EE0130 FF, CO03EI0140 FF, CO03EP0150 FF, CO03EV1120 FF, CO03EV1130 FF | -17d | 0d | EBWK 6 Day Egypt Holidays |  | 2006-07-29 | 110 | 0 | 0 | 03E | T0110 | 12 | 03 | CO | 1T1 | 03E | T0 | T | C | C |  |  |  |  |
| SC03DT0120 |  | 03D RFSU | milestone | 0d | 2008-02-03 | 2008-02-03 | SC03DI0150 FF, CO03DT0110 FF | -20d | 27d | EBWK 7 Day No Holidays |  | 2006-07-29 | 120 | 0 | 0 | 03D | T0120 |  | 03 | SC | 000 | 03D | T0 | T | S | C |  |  |  |  |
| SC03CT0120 |  | 03C RFSU | milestone | 0d | 2008-02-06 | 2008-02-06 | SC03CI0150 FF, CO03CT0110 FF | -23d | 24d | EBWK 7 Day No Holidays |  | 2006-07-29 | 120 | 0 | 0 | 03C | T0120 |  | 03 | SC | 000 | 03C | T0 | T | S | C |  |  |  |  |
| CO03YT0110 |  | 03Y Mechanical Completion | milestone | 0d | 2008-02-16 | 2008-02-16 | CO03YE0130 FF, CO03YI0140 FF, CO03YP0150 FF, CO03YV1120 FF, CO03YE0110 FF, CO03YC0120 FF | 47d | 6d | EBWK 6 Day Egypt Holidays |  | 2006-07-29 | 110 | 0 | 0 | 03Y | T0110 | 12 | 03 | CO | 1T1 | 03Y | T0 | T | C | C |  |  |  |  |
| SC03ET0120 |  | 03E RFSU | milestone | 0d | 2008-02-21 | 2008-02-21 | SC03EI0150 FF, CO03EV2110, CO03EV2120 FF, CO03ET0110 FF | -38d | 9d | EBWK 7 Day No Holidays |  | 2006-07-29 | 120 | 7.4 | 0 | 03E | T0120 |  | 03 | SC | 000 | 03E | T0 | T | S | C |  |  | C5 |  |
| SC03YT0120 |  | 03Y RFSU | milestone | 0d | 2008-02-23 | 2008-02-23 | SC03YI0150 FF, CO03YV2120 FF, CO03YT0110 FF | 48d | 107d | EBWK 7 Day No Holidays |  | 2006-07-29 | 120 | 0 | 0 | 03Y | T0120 |  | 03 | SC | 000 | 03Y | T0 | T | S | C |  |  |  |  |
|  | T1 | **Commissioning** |  |  |  |  |  |  |  |  |  |  |  |  |  |  |  |  |  |  |  |  |  |  |  |  |  |  |  |  |
|  | CN | **Project Completion** |  |  |  |  |  |  |  |  |  |  |  |  |  |  |  |  |  |  |  |  |  |  |  |  |  |  |  |  |
|  | CS | **Plant Services** |  |  |  |  |  |  |  |  |  |  |  |  |  |  |  |  |  |  |  |  |  |  |  |  |  |  |  |  |
|  | PL | **Pipeline** |  |  |  |  |  |  |  |  |  |  |  |  |  |  |  |  |  |  |  |  |  |  |  |  |  |  |  |  |
|  | X0 | **Fire & Safety** |  |  |  |  |  |  |  |  |  |  |  |  |  |  |  |  |  |  |  |  |  |  |  |  |  |  |  |  |
|  | D0 | **Demolition** |  |  |  |  |  |  |  |  |  |  |  |  |  |  |  |  |  |  |  |  |  |  |  |  |  |  |  |  |
|  | CK | **Home Office Construction** |  |  |  |  |  |  |  |  |  |  |  |  |  |  |  |  |  |  |  |  |  |  |  |  |  |  |  |  |
|  | 04 | **Corridor** |  |  | 2007-01-15 | 2007-12-02 |  |  |  |  |  |  |  |  |  |  |  |  |  |  |  |  |  |  |  |  |  |  |  |  |
|  | C0 | **Concrete / Piling** |  |  | 2007-05-23 | 2007-09-22 |  |  |  |  |  |  |  |  |  |  |  |  |  |  |  |  |  |  |  |  |  |  |  |  |
| CO04AC0110 |  | 04A Concrete (Valve Boxes & Paving) |  | 100d | 2007-05-23 | 2007-09-22 | CO04AU4120 SS+72d | 130d | 22d | EBWK 6 Day Egypt Holidays |  | 2006-07-29 | U40 | 0 | 0 | 04A | U4U40 |  | 04 | CO | 1C1 | 04A | C0 | C | C |  |  |  |  |  |
| WO04AC0100 |  | 04A Concrete (Valve Boxes & Paving) | WBS summary | 100d | 2007-05-23 | 2007-09-22 | EK000YA000 | 130d | 470d | EBWK 6 Day Egypt Holidays | Concrete and Paving - Construction [16094.1 h] | 2006-07-29 | U40 | 0 | 0 | 04A | U4U40 |  | 04 | CO | 1C1 | 04A | C0 | C | C | WC |  |  |  | F |

| ID | WBS | Activity | Type | Duration | Start | Finish | Predecessors | Remaining | Planned start | Planned finish | Total float | Free float | Constraint | Calendar | Resources | zData Date | Optimistic Duration | Most Likely Duration | Pessimistic Duration | Sequence | PCA Criticality Index | PCA Duration Sensitivity | User Defined Field 1 | User Definer Field 2 | EB02 - UNIT | EB01 - RESP | EB06 - WORK OP | EB03 - AREA | EB05 - DISCIPLINE | EB04 - CLASS | EB11 - FLAG | EB00 - EPC | EB21 - Rev 2 Risk Associations | EB09 - IPMS | user_integer1 | user_number1 |
| --- | --- | --- | --- | --- | --- | --- | --- | --- | --- | --- | --- | --- | --- | --- | --- | --- | --- | --- | --- | --- | --- | --- | --- | --- | --- | --- | --- | --- | --- | --- | --- | --- | --- | --- | --- | --- |
|  | C1 | **Concrete Paving** |  |  |  |  |  |  |  |  |  |  |  |  |  |  |  |  |  |  |  |  |  |  |  |  |  |  |  |  |  |  |  |  |  |  |
|  | U4 | **U/G Piping** |  |  | 2007-02-28 | 2007-10-01 |  |  |  |  |  |  |  |  |  |  |  |  |  |  |  |  |  |  |  |  |  |  |  |  |  |  |  |  |  |  |
| CO04AU4120 |  | 04A U/G Piping Installation |  | 164d | 2007-02-28 | 2007-09-08 | EM04API138 FS+30d, EM04API200, CK000U4110 FF+82d, PK000PIA4J FF+82d, EM04API138 FF+112d, XE000OW350, CO04AV1100 FF+24d |  |  |  | 108d | 0d | start on or after 2007-01-08 | EBWK 6 Day Egypt Holidays |  | 2006-07-29 | 140 | 164 | 212 | 120 | 0 | 2.9 | 04U | U4120 | 04 | CO | 1U2 | 04A | U4 | U | C | C | 05A |  |  |  |
| WO04AE0100 |  | 04A Above Ground Electrical | WBS summary | 176d | 2007-02-28 | 2007-10-01 | EK000YA000 |  |  |  | 108d | 466d |  | EBWK 6 Day Egypt Holidays | Aboveground Electrical - Construction | 2006-07-29 |  |  |  | U40 | 0 | 0 | 04A | U4U40 | 04 | CO | E00 | 04A | E0 | E | WC | C |  | F |  |  |
| WO04AI0100 |  | 04A Install Instruments & Test | WBS summary | 176d | 2007-02-28 | 2007-10-01 | EK000YA000 |  |  |  | 108d | 466d |  | EBWK 6 Day Egypt Holidays | Instrumentation and Control - Construction | 2006-07-29 |  |  |  | U40 | 0 | 0 | 04A | U4U40 | 04 | CO | I00 | 04A | I0 | I | WC | C |  | F |  |  |
| WO04AM0100 |  | 04A Major Equipment | WBS summary | 176d | 2007-02-28 | 2007-10-01 | EK000YA000 |  |  |  | 108d | 466d |  | EBWK 6 Day Egypt Holidays | Major Equipment - Construction | 2006-07-29 |  |  |  | U40 | 0 | 0 | 04A | U4U40 | 04 | CO | 1M1 | 04A | M0 | M | WC | C |  | F |  |  |
| WO04AS0100 |  | 04A Erect Steel | WBS summary | 176d | 2007-02-28 | 2007-10-01 | EK000YA000 |  |  |  | 108d | 466d |  | EBWK 6 Day Egypt Holidays | Structural Steel - Construction [7.73 h] | 2006-07-29 |  |  |  | U40 | 0 | 0 | 04A | U4U40 | 04 | CO | 1S1 | 04A | S0 | S | WC | C |  | F |  |  |
| WO04AU4100 |  | 04A U/G Piping Installation | WBS summary | 176d | 2007-02-28 | 2007-10-01 | EK000YA000 |  |  |  | 108d | 466d |  | EBWK 6 Day Egypt Holidays | U/G Piping - Construction [117061 h] | 2006-07-29 |  |  |  | U40 | 0 | 0 | 04A | U4U40 | 04 | CO | 1U2 | 04A | U4 | U | WC | C |  | F |  |  |
| CO04AU4130 |  | 04A Punchlist / Test U/G Piping |  | 100d | 2007-05-28 | 2007-10-01 | CO04AU4120 FF+12d, CO04AU4120 SS+72d, CO01JP0230 |  |  |  | 108d | 0d |  | EBWK 6 Day Egypt Holidays |  | 2006-07-29 | 24 | 30 | 36 | 120 | 0 | 0.4 | 04U | U4120 | 04 | CO | 1P4 | 04A | U4 | P | CD | C | 05A |  | 36 |  |
|  | U3 | **U/G Electrical** |  |  | 2007-05-01 | 2007-09-09 |  |  |  |  |  |  |  |  |  |  |  |  |  |  |  |  |  |  |  |  |  |  |  |  |  |  |  |  |  |  |
| CO04AU3110 |  | 04A U/G Fiber Optic Cable Installation |  | 112d | 2007-05-01 | 2007-09-09 | CO04AU4120 SS+12d, EM000ELEH2 FS+30d, CO04AU4120 FF |  |  |  | 137d | 29d | start on or after 2007-05-01 | EBWK 6 Day Egypt Holidays |  | 2006-07-29 | 100 | 128 | 128 | 110 | 0 | 0 | 04U | U3110 | 04 | CO | 1U3 | 04A | U3 | U | C | C | 05A |  |  | -85 |
| WO04AU3100 |  | 04A Install U/G Electrical | WBS summary | 112d | 2007-05-01 | 2007-09-09 | EK000YA000 |  |  |  | 137d | 477d |  | EBWK 6 Day Egypt Holidays | U/G Piping - Construction [705 h] | 2006-07-29 |  |  |  | U40 | 0 | 0 | 04A | U4U40 | 04 | CO | U30 | 04A | U3 | U | WC | C |  | F |  |  |
|  | A0 | **Buildings** |  |  |  |  |  |  |  |  |  |  |  |  |  |  |  |  |  |  |  |  |  |  |  |  |  |  |  |  |  |  |  |  |  |  |
|  | S0 | **Structural / Misc. Steel** |  |  |  |  |  |  |  |  |  |  |  |  |  |  |  |  |  |  |  |  |  |  |  |  |  |  |  |  |  |  |  |  |  |  |
|  | M0 | **Mechanical Equipment** |  |  |  |  |  |  |  |  |  |  |  |  |  |  |  |  |  |  |  |  |  |  |  |  |  |  |  |  |  |  |  |  |  |  |
|  | P0 | **A/G Piping** |  |  |  |  |  |  |  |  |  |  |  |  |  |  |  |  |  |  |  |  |  |  |  |  |  |  |  |  |  |  |  |  |  |  |
|  | E0 | **A/G Electrical** |  |  |  |  |  |  |  |  |  |  |  |  |  |  |  |  |  |  |  |  |  |  |  |  |  |  |  |  |  |  |  |  |  |  |
|  | I0 | **Instrumentation** |  |  |  |  |  |  |  |  |  |  |  |  |  |  |  |  |  |  |  |  |  |  |  |  |  |  |  |  |  |  |  |  |  |  |
|  | V1 | **Painting** |  |  | 2007-01-15 | 2007-06-24 |  |  |  |  |  |  |  |  |  |  |  |  |  |  |  |  |  |  |  |  |  |  |  |  |  |  |  |  |  |  |
| CO04AV1100 |  | 04A Paint |  | 128d | 2007-01-15 A | 2007-06-24 | CO000K0100 | 128d | 2007-01-13 | 2007-06-10 | 148d | 40d |  | EBWK 6 Day Egypt Holidays |  | 2006-07-29 | 100 | 128 | 128 | 110 | 0 | 0 | 04U | U3110 | 04 | CO | 1V1 | 04A | V1 | V |  | C |  |  |  | -85 |
| WO04AV1100 |  | 04A Paint | WBS summary | 128d | 2007-01-15 A | 2007-06-24 | EK000YA000 | 128d | 2007-01-13 | 2007-06-10 | 148d | 542d |  | EBWK 6 Day Egypt Holidays | Insulation - Construction [54320.5 h] | 2006-07-29 |  |  |  | U40 | 0 | 0 | 04A | U4U40 | 04 | CO | V10 | 04A | V1 | V | WC | C |  | F |  |  |
|  | V2 | **Insulation** |  |  | 2007-06-11 | 2007-10-28 |  |  |  |  |  |  |  |  |  |  |  |  |  |  |  |  |  |  |  |  |  |  |  |  |  |  |  |  |  |  |
| CO04AV2110 |  | 04A Insulation |  | 100d | 2007-06-11 | 2007-10-28 | CO04AU4120 SS+72d, CO04AU4130 FF+6d, CO04AU4130 SS+12d |  |  |  | 108d | 0d |  | EBWK 6 Day Egypt Holidays |  | 2006-07-29 |  |  |  | U40 | 0 | 0 | 04A | U4U40 | 04 | CO | V20 | 04A | V2 | V |  | C |  |  |  |  |
| WO04AV2100 |  | 04A Insulation | WBS summary | 100d | 2007-06-11 | 2007-10-28 | EK000YA000 |  |  |  | 108d | 454d |  | EBWK 6 Day Egypt Holidays | Insulation - Construction | 2006-07-29 |  |  |  | U40 | 0 | 0 | 04A | U4U40 | 04 | CO | V20 | 04A | V2 | V | WC | C |  |  |  |  |

Notes:
- CO04AU4120: P3 Activity Log Info: Need to tie to material / deliveries
- CO04AU4130: P3 Activity Log Info: Need to tie to material / deliveries
- CO04AU3110: P3 Activity Log Info: Need to tie to material / deliveries
- CO04AV1100: P3 Activity Log Info: Need to tie to material / deliveries

| ID | WBS | Activity | Type | Duration | Start | Finish | Predecessors | Complete | Remaining | Planned start | Planned finish | Total float | Free float | Expected finish | Calendar | Resources | zData Date | Sequence | PCA Criticality Index | PCA Duration Sensitivity | User Defined Field 1 | User Definer Field 2 | EB02 - UNIT | EB01 - RESP | EB06 - WORK OP | EB03 - AREA | EB05 - DISCIPLINE | EB04 - CLASS | EB00 - EPC | EB11 - FLAG | EB09 - IPMS | user_number1 | EB21 - Rev 2 Risk Associations | user_integer2 | EB10 - KEY | EB08 - TAG | EB12 - TEMP | EB14 - RISK | EB22 - Critical Actvities | Optimistic Duration | Most Likely Duration | Pessimistic Duration | user_integer1 |
| --- | --- | --- | --- | --- | --- | --- | --- | --- | --- | --- | --- | --- | --- | --- | --- | --- | --- | --- | --- | --- | --- | --- | --- | --- | --- | --- | --- | --- | --- | --- | --- | --- | --- | --- | --- | --- | --- | --- | --- | --- | --- | --- | --- |
|  | K0 | **Site Prep** |  |  | 2007-06-18 | 2007-11-04 |  |  |  |  |  |  |  |  |  |  |  |  |  |  |  |  |  |  |  |  |  |  |  |  |  |  |  |  |  |  |  |  |  |  |  |  |  |
| CO04AK0110 |  | 04A Site Prep (Leveling) |  | 100d | 2007-06-18 | 2007-11-04 | CO04AV2110 FF+6d, CO04AV2110 SS+6d |  |  |  |  | 108d | 0d |  | EBWK 6 Day Egypt Holidays |  | 2006-07-29 | U40 | 0 | 0 | 04A | U4U40 | 04 | CO | K00 | 04A | K0 | K | C |  |  |  |  |  |  |  |  |  |  |  |  |  |  |
| WO04AK0100 |  | 04A Site Prep (Leveling) | WBS summary | 100d | 2007-06-18 | 2007-11-04 | EK000YA000 |  |  |  |  | 108d | 448d |  | EBWK 6 Day Egypt Holidays | Concrete and Paving - Construction [12426.5 h] | 2006-07-29 | U40 | 0 | 0 | 04A | U4U40 | 04 | CO | K00 | 04A | K0 | K | C | WC | F |  |  |  |  |  |  |  |  |  |  |  |  |
|  | T0 | **Mechanical Completion** |  |  | 2007-11-04 | 2007-12-02 |  |  |  |  |  |  |  |  |  |  |  |  |  |  |  |  |  |  |  |  |  |  |  |  |  |  |  |  |  |  |  |  |  |  |  |  |  |
| CO04AT0110 |  | 04A Mechanical Completion | milestone | 0d | 2007-11-04 | 2007-11-04 | CO04AU3110 FF, CO04AU4120 FF, EM04API138 FF+30d, CO04AK0110, CO04AC0110 |  |  |  |  | 108d | 0d |  | EBWK 6 Day Egypt Holidays |  | 2006-07-29 | 110 | 0 | 0 | 04A | T0110 | 04 | CO | 1T1 | 04A | T0 | T | C | C |  | -133 | 05A |  |  |  |  |  |  |  |  |  |  |
| SC04AT0120 |  | 04A RFSU | milestone | 0d | 2007-12-02 | 2007-12-02 | CO04AT0110 FF+24d |  |  |  |  | 132d | 191d |  | EBWK 7 Day No Holidays |  | 2006-07-29 | 120 | 0 | 0 | 04A | T0120 | 04 | SC | 000 | 04A | T0 | T | S | C |  |  | 05A |  |  |  |  |  |  |  |  |  |  |
|  | T1 | **Commissioning** |  |  |  |  |  |  |  |  |  |  |  |  |  |  |  |  |  |  |  |  |  |  |  |  |  |  |  |  |  |  |  |  |  |  |  |  |  |  |  |  |  |
|  | D0 | **Demolition** |  |  |  |  |  |  |  |  |  |  |  |  |  |  |  |  |  |  |  |  |  |  |  |  |  |  |  |  |  |  |  |  |  |  |  |  |  |  |  |  |  |
|  | PL | **Pipeline** |  |  |  |  |  |  |  |  |  |  |  |  |  |  |  |  |  |  |  |  |  |  |  |  |  |  |  |  |  |  |  |  |  |  |  |  |  |  |  |  |  |
|  | CK | **Home Office Construction** |  |  |  |  |  |  |  |  |  |  |  |  |  |  |  |  |  |  |  |  |  |  |  |  |  |  |  |  |  |  |  |  |  |  |  |  |  |  |  |  |  |
|  | X0 | **Fire & Safety** |  |  |  |  |  |  |  |  |  |  |  |  |  |  |  |  |  |  |  |  |  |  |  |  |  |  |  |  |  |  |  |  |  |  |  |  |  |  |  |  |  |
|  | CS | **Plant Services** |  |  |  |  |  |  |  |  |  |  |  |  |  |  |  |  |  |  |  |  |  |  |  |  |  |  |  |  |  |  |  |  |  |  |  |  |  |  |  |  |  |
|  | CN | **Project Completion** |  |  |  |  |  |  |  |  |  |  |  |  |  |  |  |  |  |  |  |  |  |  |  |  |  |  |  |  |  |  |  |  |  |  |  |  |  |  |  |  |  |
|  | 05 | **Dock / Storage** |  |  | 2006-11-23 | 2008-06-09 |  |  |  |  |  |  |  |  |  |  |  |  |  |  |  |  |  |  |  |  |  |  |  |  |  |  |  |  |  |  |  |  |  |  |  |  |  |
| CO05AC0170 |  | 05A Install Test Piles |  | 9d | 2006-12-16 A | 2006-12-27 A | CO000K0100 | 100% |  | 2007-06-11 | 2007-06-20 |  |  |  | EBWK 6 Day Egypt Holidays |  | 2006-07-29 | 160 | 0 | 0 | 05A | C0160 | 05 | CO | 1C1 | 05A | C0 | C | C |  |  |  |  | 24 | T |  |  |  |  |  |  |  |  |
| CO05AC0175 |  | 05A Test Piles (Load Test) |  | 36d | 2006-12-28 A | 2007-02-08 | CO05AC0170 | 67% | 12d | 2007-01-13 | 2007-02-22 | -51d | 0d | 2007-02-08 | EBWK 6 Day Egypt Holidays |  | 2006-07-29 | 160 | 0 | 0 | 05A | C0160 | 05 | CO | 1C1 | 05A | C0 | C | C |  |  |  |  | 24 | T |  |  |  |  |  |  |  |  |
| EK05ACV210 |  | 05A COSMO Design Approval (Assuming No Change) |  | 14d | 2007-02-10 | 2007-02-15 | CO05AC0175, EK05ACV200 FF |  |  | 2007-02-10 | 2007-02-25 | -51d | 0d |  | EBWK 6 Day Egypt Holidays |  | 2006-07-29 | 160 | 0 | 0 | 05A | C0160 | 05 | EK | 1C1 | 05A | CV | C | E |  |  |  |  | 24 | T |  |  |  |  |  |  |  |  |
| CO05AC0185 |  | 05A Procure Material & Mob Piling Contractor |  | 12d | 2007-02-17 | 2007-03-01 | EK05ACV210 |  |  |  |  | -51d | 0d |  | EBWK 6 Day Egypt Holidays |  | 2006-07-29 | 160 | 0 | 0 | 05A | C0160 | 05 | CO | 1C1 | 05A | C0 | C | C |  |  |  |  | 24 | T |  |  |  |  |  |  |  |  |
|  | C0 | **Concrete / Piling** |  |  | 2007-03-03 | 2007-08-29 |  |  |  |  |  |  |  |  |  |  |  |  |  |  |  |  |  |  |  |  |  |  |  |  |  |  |  |  |  |  |  |  |  |  |  |  |  |
| CO05AC0150 |  | 05A Install Piling - 2101-F Ammonia Tank |  | 67d | 2007-03-03 | 2007-05-19 | CO05AC0185 |  |  |  |  | -51d | 0d |  | EBWK 6 Day Egypt Holidays |  | 2006-07-29 | 160 | 0 | 0 | 05A | C0160 | 05 | CO | 1C1 | 05A | C0 | C | C |  |  |  |  | 24 | T | 2101F |  |  |  |  |  |  |  |
| CO05AC0155 |  | 05A Install Piling - 2102-F Ammonia Tank |  | 67d | 2007-03-03 | 2007-05-19 | CO05AC0185 |  |  |  |  | -40d | 0d |  | EBWK 6 Day Egypt Holidays |  | 2006-07-29 | 160 | 0 | 0 | 05A | C0160 | 05 | CO | 1C1 | 05A | C0 | C | C |  |  |  |  | 24 | T | 2102F |  |  |  |  |  |  |  |
| WO050C0100 |  | 050 Concrete & Excavation | WBS summary | 145d | 2007-03-03 | 2007-08-29 | EK000YA000 |  |  | 2007-03-03 | 2007-08-18 | 152d | 485d |  | EBWK 6 Day Egypt Holidays | Concrete and Paving - Construction [1144704 h] | 2006-07-29 | C00 | 0 | 0 | 05A | C0C00 | 05 | CO | 1C1 | 050 | C0 | C | C | WC |  |  |  |  |  |  |  |  |  |  |  |  |  |
| CO05AC0160 |  | 05A Form, Pour, Strip Fnd - 2101-F Ammonia Tank |  | 50d | 2007-05-20 | 2007-07-16 | EM05ACV164 FS+30d, EK05ACV110, CO05AC0150 |  |  |  |  | -51d | 0d |  | EBWK 6 Day Egypt Holidays |  | 2006-07-29 | 160 | 0 | 0 | 05A | C0160 | 05 | CO | 1C1 | 05A | C0 | C | C |  |  |  |  | 24 | T | 2101F | X | 03 | C1 |  |  |  |  |
| CO05AC0165 |  | 05A Form, Pour, Strip Fnd - 2102-F Ammonia Tank |  | 50d | 2007-05-20 | 2007-07-16 | EM05ACV164 FS+30d, EK05ACV110, CO05AC0155 |  |  |  |  | -40d | 0d |  | EBWK 6 Day Egypt Holidays |  | 2006-07-29 | 160 | 0 | 0 | 05A | C0160 | 05 | CO | 1C1 | 05A | C0 | C | C |  |  |  |  | 24 | T | 2102F | X | 03 | C2 |  |  |  |  |
| CO05AC0120 |  | 05A Form, Pour, Strip Fnds - Sleeper & Rack |  | 30d | 2007-06-10 | 2007-07-14 | EM05ACV166 FS+20d, EM05ACV167, CO05AC0165 SS+18d, EM05ACV133 |  |  |  |  | 44d | 0d |  | EBWK 6 Day Egypt Holidays |  | 2006-07-29 | 120 | 0 | 0 | 05A | C0120 | 05 | CO | 1C1 | 05A | C0 | C | C |  |  |  |  |  |  |  |  |  |  |  |  |  |  |
| CO05BC0110 |  | 05B Form, Pour, Strip Fnds - Sleepers |  | 30d | 2007-07-15 | 2007-08-29 | XE000K0110, CO05AC0120, CO000K0110 SS, EM05BCV167 FS+30d, EM05BCV133 FS+30d, XE05AOW340, EM05BCV122 FS+30d |  |  | 2007-07-15 | 2007-08-18 | 152d | 0d |  | EBWK 6 Day Egypt Holidays |  | 2006-07-29 | 110 | 0 | 3.8 | 05B | C0110 | 05 | CO | 1C1 | 05B | C0 | C | C | CD |  |  | 05A |  |  |  |  |  |  | 30 | 40 | 60 | 30 |
| CO05AC0110 |  | 05A Form, Pour, Strip Fnds - Major Fnds Gen'l |  | 18d | 2007-07-17 | 2007-08-06 | XE000K0110, EM05ACV164 FS+30d, CO05AC0165, XE05AOW340, EM05API132 FS+39d, EM05ACV160 FS+30d, EK000CV045 FS+30d, EM05API120 SS+49d |  |  |  |  | 77d | 0d |  | EBWK 6 Day Egypt Holidays |  | 2006-07-29 | 110 | 0 | 0 | 05A | C0110 | 05 | CO | 1C1 | 05A | C0 | C | C |  |  |  |  |  |  |  |  |  |  |  |  |  |  |

| ID | WBS | Activity | Type | Duration | Start | Finish | Predecessors | Planned start | Planned finish | Total float | Free float | Calendar | Resources | zData Date | Sequence | PCA Criticality Index | PCA Duration Sensitivity | User Defined Field 1 | User Definer Field 2 | EB02 - UNIT | EB01 - RESP | EB06 - WORK OP | EB03 - AREA | EB05 - DISCIPLINE | EB04 - CLASS | EB11 - FLAG | EB00 - EPC | EB09 - IPMS | EB19 - System | user_number1 | Optimistic Duration | Most Likely Duration | Pessimistic Duration | EB21 - Rev 2 Risk Associations | EB07 - REQN | user_integer1 | EB08 - TAG | user_integer2 | EB14 - RISK |
| --- | --- | --- | --- | --- | --- | --- | --- | --- | --- | --- | --- | --- | --- | --- | --- | --- | --- | --- | --- | --- | --- | --- | --- | --- | --- | --- | --- | --- | --- | --- | --- | --- | --- | --- | --- | --- | --- | --- | --- |
|  | C1 | **Concrete Paving** |  |  | 2007-01-27 | 2007-01-27 |  |  |  |  |  |  |  |  |  |  |  |  |  |  |  |  |  |  |  |  |  |  |  |  |  |  |  |  |  |  |  |  |  |
| WO050C0110 |  | 050 Concrete Paving | WBS summary | 0d | 2007-01-27 | 2007-01-27 | EK000YA000 | 2007-01-27 | 2007-07-14 | 0d | 670d | EBWK 6 Day Egypt Holidays | Concrete and Paving - Construction | 2006-07-29 | C00 | 0 | 0 | 05A | C0C00 | 05 | CO | 1C3 | 050 | C0 | C | WC | C |  |  |  |  |  |  |  |  |  |  |  |  |
|  | U4 | **U/G Piping** |  |  | 2007-06-12 | 2007-10-30 |  |  |  |  |  |  |  |  |  |  |  |  |  |  |  |  |  |  |  |  |  |  |  |  |  |  |  |  |  |  |  |  |  |
| CO05AU4120 |  | 05A U/G Piping Installation |  | 48d | 2007-06-12 | 2007-08-06 | CO05AC0110 FF, CK05AU4110 FS+30d |  |  | 77d | 0d | EBWK 6 Day Egypt Holidays |  | 2006-07-29 | 120 | 0 | 0 | 05A | U4120 | 05 | CO | 1U2 | 05A | U4 | U | C | C |  |  |  |  |  |  |  |  |  |  |  |  |
| WO050U4100 |  | 050 U/G Piping Installation | WBS summary | 102d | 2007-06-12 | 2007-10-30 | EK000YA000 |  |  | 135d | 451d | EBWK 6 Day Egypt Holidays | U/G Piping - Construction [28591.8 h] | 2006-07-29 | U40 | 0 | 0 | 05A | U4U40 | 05 | CO | 1U2 | 050 | U4 | U | WC | C | F |  |  |  |  |  |  |  |  |  |  |  |
| CO05UP0150 |  | 05U LB Pipe Erection (Firewater Piping) |  | 72d | 2007-07-17 | 2007-10-30 | CK05UU4150 FF+18d, EM05UPI200, CO05AC0165 |  |  | 135d | 182d | EBWK 6 Day Egypt Holidays |  | 2006-07-29 | 130 | 0 | 3 | 01D | P0130 | 05 | CO | 1U2 | 05U | U4 | U | PS | C |  | FW |  |  |  |  |  |  |  |  |  |  |
|  | U3 | **U/G Electrical** |  |  | 2007-07-17 | 2007-08-13 |  |  |  |  |  |  |  |  |  |  |  |  |  |  |  |  |  |  |  |  |  |  |  |  |  |  |  |  |  |  |  |  |  |
| CO05AU3110 |  | 05A U/G Earthing Installation |  | 24d | 2007-07-17 | 2007-08-13 | CO05AU4120 FF+6d, EM000ELEH2 FS+30d |  |  | 77d | 112d | EBWK 6 Day Egypt Holidays |  | 2006-07-29 | 110 | 0 | 0 | 05A | U3110 | 05 | CO | 1U3 | 05A | U3 | U | C | C |  |  | 40 |  |  |  |  |  |  |  |  |  |
| WO050U3100 |  | 050 Install U/G Electrical | WBS summary | 24d | 2007-07-17 | 2007-08-13 | EK000YA000 |  |  | 77d | 499d | EBWK 6 Day Egypt Holidays | U/G Piping - Construction [9381.82 h] | 2006-07-29 | U30 | 0 | 0 | 05A | U3U30 | 05 | CO | U30 | 050 | U3 | U | WC | C |  |  |  |  |  |  |  |  |  |  |  |  |
|  | A0 | **Buildings** |  |  | 2007-10-21 | 2007-11-18 |  |  |  |  |  |  |  |  |  |  |  |  |  |  |  |  |  |  |  |  |  |  |  |  |  |  |  |  |  |  |  |  |  |
| CO05BA0110 |  | 05B Erect Dock Control Operating Building |  | 19d | 2007-10-21 | 2007-11-18 | PK05BML51Z, PO05BS0010 FS+30d, CO05BM0110 SS+24d | 2007-10-21 | 2007-11-12 | 135d | 0d | EBWK 6 Day Egypt Holidays | Architectural - Construction | 2006-07-29 | 110 | 0 | 0 | 05B | M0110 | 05 | CO | 1A1 | 05B | A0 | A |  | C |  |  | 0 | 18 | 24 | 30 | 05A |  |  |  |  |  |
| WO050A0100 |  | 050 Buildings | WBS summary | 19d | 2007-10-21 | 2007-11-18 | EK000YA000 | 2007-10-21 | 2007-11-12 | 135d | 436d | EBWK 6 Day Egypt Holidays | Architectural - Construction [1286.54 h] | 2006-07-29 | 110 | 0 | 0 | 05B | M0110 | 05 | CO | 1A1 | 050 | A0 | A | WC | C |  |  |  | 18 | 24 | 30 | 05A |  |  |  |  |  |
|  | S0 | **Structural / Misc. Steel** |  |  | 2007-08-08 | 2007-09-12 |  |  |  |  |  |  |  |  |  |  |  |  |  |  |  |  |  |  |  |  |  |  |  |  |  |  |  |  |  |  |  |  |  |
| CO05AS0110 |  | 05A Erect Structural Steel - Structure |  | 10d | 2007-08-08 | 2007-08-20 | PO05AS0000 FS+30d, PO05AS0010 FF+36d, EM05ACV122 FS+30d, CO05AC0120 |  |  | 23d | 0d | EBWK 6 Day Egypt Holidays |  | 2006-07-29 | 110 | 0 | 0 | 05A | S0110 | 05 | CO | 1S1 | 05A | S0 | S | C | C |  |  | 36 |  |  |  |  | B1040 |  |  |  |  |
| WO050S0100 |  | 050 Erect Steel | WBS summary | 30d | 2007-08-08 | 2007-09-12 | EK000YA000 |  |  | 23d | 474d | EBWK 6 Day Egypt Holidays | Structural Steel - Construction [12659.4 h] | 2006-07-29 | S00 | 0 | 0 | 05A | S0S00 | 05 | CO | 1S1 | 050 | S0 | S | WC | C |  |  |  |  |  |  |  |  |  |  |  |  |
| CO05AS0120 |  | 05A Erect Misc Steel |  | 6d | 2007-09-05 | 2007-09-12 | CO05AS0110 SS+24d, PO05AS0010 FS+30d |  |  | 23d | 52d | EBWK 6 Day Egypt Holidays |  | 2006-07-29 | 120 | 0 | 0 | 05A | S0120 | 05 | CO | 1S2 | 05A | S0 | S | C | C |  |  | 36 |  |  |  |  | B1040 |  |  |  |  |
|  | M0 | **Mechanical Equipment** |  |  | 2007-09-01 | 2008-01-03 |  |  |  |  |  |  |  |  |  |  |  |  |  |  |  |  |  |  |  |  |  |  |  |  |  |  |  |  |  |  |  |  |  |
| CO05BM0110 |  | 05B Install Loading Arm |  | 166d | 2007-09-01 | 2008-01-03 | PK05BML51Z, PO05BS0010 FF+100d, XE05BM0150, PK03FMU11Z, PK02LMU11Z, PK02FMU11Z, PK02GMU11Z | 2007-09-01 | 2008-04-09 | 62d | 0d | EBWK 6 Day Egypt Holidays |  | 2006-07-29 | 110 | 0 | 0 | 05B | M0110 | 05 | CO | 1M1 | 05B | M0 | M | CD | C |  |  | 0 | 48 | 83 | 166 | 05A |  | 166 |  |  |  |
| WO050M0100 |  | 050 Major Equipment | WBS summary | 166d | 2007-09-01 | 2008-01-03 | EK000YA000 | 2007-09-01 | 2008-04-09 | 61d | 400d | EBWK 6 Day Egypt Holidays | Major Equipment - Construction [13334.8 h] | 2006-07-29 | M00 | 0 | 0 | 05A | M0M00 | 05 | CO | 1M1 | 050 | M0 | M | WC | C |  |  |  |  |  |  |  |  |  |  |  |  |
| CO05AM0110 |  | 05A Set 2202-B Flare & KO Drum |  | 28d | 2007-11-27 | 2008-01-03 | CO05AC0110, CO05AM0155 SS+72d |  |  | 21d | 50d | EBWK 6 Day Egypt Holidays |  | 2006-07-29 | 110 | 0 | 0 | 05A | M0110 | 05 | CO | 1M1 | 05A | M0 | M |  | C |  |  | 40 |  |  |  |  |  |  | 2202B |  |  |
| CO05AM0130 |  | 05A Set 2101-L Ammonia Refrigeration Package |  | 3d | 2007-11-27 | 2007-11-29 | PK05AML33Z, CO05AC0110, CO05AM0155 SS+72d |  |  | 46d | 75d | EBWK 6 Day Egypt Holidays |  | 2006-07-29 | 130 | 0 | 0 | 05A | M0130 | 05 | CO | 1M1 | 05A | M0 | M |  | C |  |  | 40 |  |  |  |  |  |  | 2101L |  |  |
| CO05AM0150 |  | 05A Set Rotating Equipment |  | 18d | 2007-11-27 | 2007-12-17 | PK05AMJ36Z, CO05AC0110, CO05AM0155 SS+72d |  |  | 31d | 60d | EBWK 6 Day Egypt Holidays |  | 2006-07-29 | 110 | 0 | 0 | 05A | M0110 | 05 | CO | 1M1 | 05A | M0 | M |  | C |  |  | 40 |  |  |  |  |  |  |  |  |  |
|  | P0 | **A/G Piping** |  |  | 2007-08-30 | 2008-04-13 |  |  |  |  |  |  |  |  |  |  |  |  |  |  |  |  |  |  |  |  |  |  |  |  |  |  |  |  |  |  |  |  |  |
| CO05BP0130 |  | 05B LB Pipe Erection - To Loading Arm |  | 26d | 2007-08-30 | 2007-10-21 | CK05BP0110, CO05BV1110 FF+10d, PK000PTA0K FS+30d, CO05BC0110, EM05BPI138 FS+30d, EM5BSY272 FS+30d, PO05BS0010 FS+30d |  |  | 152d | 0d | EBWK 6 Day Egypt Holidays |  | 2006-07-29 | 130 | 0 | 5.1 | 05B | P0130 | 05 | CO | 1P2 | 05B | P0 | P | C | C |  |  | 40 | 18 | 26 | 36 | 05A |  |  |  | 26 | 21 |
| WO050P0100 |  | 050 Above Ground Pipe | WBS summary | 171d | 2007-08-30 | 2008-04-13 | EK000YA000 |  |  | 19d | 314d | EBWK 6 Day Egypt Holidays | Aboveground Pipe - Construction [146672 h] | 2006-07-29 | P00 | 0 | 0 | 05A | P0P00 | 05 | CO | P00 | 050 | P0 | P | WC | C |  |  |  |  |  |  |  |  |  |  |  |  |
| CO05BP0140 |  | 05B SB Pipe Erection - To Loading Arm |  | 26d | 2007-09-06 | 2007-10-28 | CO05BP0130 SS+6d, CO05BP0130 FF+6d, PK000PIA1P FF+72d |  |  | 152d | 0d | EBWK 6 Day Egypt Holidays |  | 2006-07-29 | 140 | 0 | 0 | 05B | P0140 | 05 | CO | 1P3 | 05B | P0 | P | C | C |  |  | 40 | 18 | 26 | 36 | 05A |  |  |  | 26 | 21 |
| CO05AP0130 |  | 05A LB Pipe Erection |  | 96d | 2007-12-04 | 2008-03-30 | CO05AM0110 FF+24d, CO05AM0130 FF+24d, CK05AP0110, CO05AV1110 FF+10d, PK000PTA0K FS+30d, CO05AM0155 SS+48d, CO05AM0145 SS+48d, CO05AC0120, CO05AM0150 FF+24d, EM05API138 FS+30d, CO05AM0160 SS+48d, EM5ASY272 FS+30d, CO05AS0120 SS+6d, CO05AS0120 FF+6d |  |  | -29d | 0d | EBWK 6 Day Egypt Holidays |  | 2006-07-29 | 130 | 0 | 0 | 05A | P0130 | 05 | CO | 1P2 | 05A | P0 | P | C | C |  |  | 40 |  |  |  |  |  |  |  | 96 | 21 |
| CO05AP0140 |  | 05A SB Pipe Erection |  | 96d | 2007-12-11 | 2008-04-06 | CO05AP0130 SS+6d, CO05AP0130 FF+6d, PK000PIA1P FF+72d |  |  | -29d | 0d | EBWK 6 Day Egypt Holidays |  | 2006-07-29 | 140 | 0 | 0 | 05A | P0140 | 05 | CO | 1P3 | 05A | P0 | P | C | C |  |  | 40 |  |  |  |  |  |  |  | 96 | 21 |
| CO05BP0150 |  | 05B Punchlist / Test Piping |  | 13d | 2008-02-07 | 2008-02-23 | CO05BP0140 SS, CO05BP0140 FF+6d, PO000P0020 FF+30d, CO05BM0110 SS+113d |  |  | 63d | 0d | EBWK 6 Day Egypt Holidays |  | 2006-07-29 | 150 | 0 | 0 | 05B | P0150 | 05 | CO | 1P4 | 05B | P0 | P | C | C |  |  | 0 | 6 | 13 | 18 | 05A |  |  |  |  |  |
| CO05AP0150 |  | 05A Punchlist / Test Piping |  | 48d | 2008-02-18 | 2008-04-13 | CO05AP0140 SS, CO05AP0140 FF+6d, PO000P0020 FF+30d |  |  | -29d | 0d | EBWK 6 Day Egypt Holidays |  | 2006-07-29 | 150 | 0 | 0 | 05A | P0150 | 05 | CO | 1P4 | 05A | P0 | P | C | C |  |  | 40 |  |  |  |  |  |  |  |  |  |

Notes:
- CO05AU4120: P3 Activity Log Info: Need to tie to material / deliveries
- CO05UP0150: P3 Activity Log Info: Plant L.O. thru start erection of pipe 58 / weeks
- CO05AU3110: P3 Activity Log Info: Need to tie to material / deliveries
- CO05BP0130: P3 Activity Log Info: Plant L.O. thru start erection of pipe 58 / weeks
- CO05BP0140: P3 Activity Log Info: Plant L.O. thru start erection of pipe 58 / weeks
- CO05AP0130: P3 Activity Log Info: Plant L.O. thru start erection of pipe 58 / weeks
- CO05AP0140: P3 Activity Log Info: Plant L.O. thru start erection of pipe 58 / weeks

| ID | WBS | Activity | Type | Duration | Start | Finish | Predecessors | Complete | Remaining | Planned start | Planned finish | Total float | Free float | Calendar | Resources | zData Date | Optimistic Duration | Most Likely Duration | Pessimistic Duration | Sequence | PCA Criticality Index | PCA Duration Sensitivity | User Defined Field 1 | User Definer Field 2 | user_number1 | EB02 - UNIT | EB01 - RESP | EB06 - WORK OP | EB03 - AREA | EB05 - DISCIPLINE | EB04 - CLASS | EB11 - FLAG | EB00 - EPC | EB21 - Rev 2 Risk Associations | EB22 - Critical Actvities |
| --- | --- | --- | --- | --- | --- | --- | --- | --- | --- | --- | --- | --- | --- | --- | --- | --- | --- | --- | --- | --- | --- | --- | --- | --- | --- | --- | --- | --- | --- | --- | --- | --- | --- | --- | --- |
|  | E0 | **A/G Electrical** |  |  | 2007-11-18 | 2008-05-06 |  |  |  |  |  |  |  |  |  |  |  |  |  |  |  |  |  |  |  |  |  |  |  |  |  |  |  |  |  |
| CO05BE0130 |  | 05B Power/Control JB's, Tray, Cable, Termination |  | 10d | 2007-11-18 | 2007-11-29 | CO05BP0140 FF+6d, EK05BEL165 FS+30d, EK05BEL185 FF+30d, CO05BA0110, PO000E0010 FS+30d |  |  |  |  | 140d | 0d | EBWK 6 Day Egypt Holidays |  | 2006-07-29 | 10 | 10 | 18 | 130 | 0 | 4.7 | 05B | E0130 | 0 | 05 | CO | 1E1 | 05B | E0 | E | C | C | 05A |  |
| WO050E0100 |  | 050 Above Ground Electrical | WBS summary | 142d | 2007-11-18 | 2008-05-06 | EK000YA000 |  |  |  |  | 8d | 294d | EBWK 6 Day Egypt Holidays | Aboveground Electrical - Construction [45821.4 h] | 2006-07-29 |  |  |  | P00 | 0 | 0 | 05A | E0P00 |  | 05 | CO | E00 | 050 | E0 | E | WC | C |  |  |
| CO05AE0130 |  | 05A Power/Control JB's, Tray, Cable, Termination |  | 96d | 2007-12-18 | 2008-04-13 | CO05AP0140 FF+6d, PO000E0010 FS+30d |  |  |  |  | -25d | 0d | EBWK 6 Day Egypt Holidays |  | 2006-07-29 |  |  |  | 130 | 0 | 0 | 05A | E0130 | 40 | 05 | CO | 1E1 | 05A | E0 | E | C | C |  |  |
| CO05AE0110 |  | 05A Lighting JB's, Stands, Tray & Cable |  | 24d | 2008-04-02 | 2008-04-29 | CO05AS0120, PO000E0010 FS+30d, CO05AM0155 FF+18d, CO05AM0145 FF+18d, CO05AM0160 FF+18d |  |  |  |  | -22d | 0d | EBWK 6 Day Egypt Holidays |  | 2006-07-29 |  |  |  | 110 | 0 | 0 | 05A | E0110 | 40 | 05 | CO | 1E2 | 05A | E0 | E | C | C |  | C4 |
| CO05AE0120 |  | 05A Lighting Fixture Installation/Termination |  | 12d | 2008-04-23 | 2008-05-06 | CO05AE0110 FF+6d |  |  |  |  | -22d | 25d | EBWK 6 Day Egypt Holidays |  | 2006-07-29 |  |  |  | 120 | 0 | 0 | 05A | E0120 | 40 | 05 | CO | 1E3 | 05A | E0 | E | C | C |  | C4 |
|  | I0 | **Instrumentation** |  |  | 2007-11-18 | 2008-04-24 |  |  |  |  |  |  |  |  |  |  |  |  |  |  |  |  |  |  |  |  |  |  |  |  |  |  |  |  |  |
| CO05BI0120 |  | 05B Instrument JB's, Field Instr, Tray, Cable |  | 10d | 2007-11-18 | 2007-11-29 | PK020I131L, CO05BP0140 SS, CO05BP0140 FF+6d, EM020IC128 FS+30d, PK000I623L, PK000I616L, PK000I617L, PK000I611L, PK000I612L, PK000I621L, PK030I131L, PK030I611L, CO05BA0110, EM5BSY272 FS+30d, CO05BE0130 SS, EM020IC127 FS+40d, EM050IC130 FS+30d |  |  |  |  | 140d | 22d | EBWK 6 Day Egypt Holidays |  | 2006-07-29 | 10 | 10 | 18 | 120 | 0 | 0 | 05B | I0120 | 0 | 05 | CO | 1I1 | 05B | I0 | I | C | C | 05A |  |
| WO050I0100 |  | 050 Install Instruments & Test | WBS summary | 132d | 2007-11-18 | 2008-04-24 | EK000YA000 |  |  |  |  | 24d | 304d | EBWK 6 Day Egypt Holidays | Instrumentation and Control - Construction [4678.41 h] | 2006-07-29 |  |  |  | I00 | 0 | 0 | 05A | I0I00 |  | 05 | CO | I00 | 050 | I0 | I | WC | C |  |  |
| CO05AI0120 |  | 05A Instrument JB's, Field Instr, Tray, Cable |  | 96d | 2007-12-18 | 2008-04-13 | PK020I131L, CO05AP0140 SS, CO05AP0140 FF+6d, EM020IC128 FS+30d, PK000I623L, PK000I616L, PK000I617L, PK000I611L, PK000I612L, PK000I621L, PK030I131L, PK030I611L, EM5ASY272 FS+30d, CO05AE0130 SS, EM020IC127 FS+40d, EM050IC130 FS+30d |  |  |  |  | -25d | 0d | EBWK 6 Day Egypt Holidays |  | 2006-07-29 |  |  |  | 120 | 0 | 0 | 05A | I0120 | 40 | 05 | CO | 1I1 | 05A | I0 | I | C | C |  |  |
| CO05BI0140 |  | 05B Continuity Testing |  | 1d | 2008-01-06 | 2008-01-06 | CO05BI0120 SS, CO05BI0120 FF+6d, CO01GI0120 |  |  |  |  | 118d | 40d | EBWK 6 Day Egypt Holidays |  | 2006-07-29 |  |  |  | 140 | 0 | 0 | 05B | I0140 | 0 | 05 | CO | 1I3 | 05B | I0 | I | C | C | 05A |  |
| CO05BI0130 |  | 05B Install In Line Instruments |  | 1d | 2008-02-23 | 2008-02-24 | CO05BP0150 |  |  |  |  | 68d | 0d | EBWK 6 Day Egypt Holidays |  | 2006-07-29 |  |  |  | 130 | 0 | 0 | 05B | I0130 | 0 | 05 | CO | 1I2 | 05B | I0 | I | C | C | 05A |  |
| CO05AI0140 |  | 05A Continuity Testing |  | 10d | 2008-04-09 | 2008-04-20 | CO05AI0120 SS, CO05AI0120 FF+6d, CO01GI0120 |  |  |  |  | -25d | 4d | EBWK 6 Day Egypt Holidays |  | 2006-07-29 |  |  |  | 140 | 0 | 0 | 05A | I0140 | 40 | 05 | CO | 1I3 | 05A | I0 | I | C | C |  |  |
| CO05AI0130 |  | 05A Install In Line Instruments |  | 10d | 2008-04-14 | 2008-04-24 | CO05AP0150 |  |  |  |  | -29d | 0d | EBWK 6 Day Egypt Holidays |  | 2006-07-29 |  |  |  | 130 | 0 | 0 | 05A | I0130 | 40 | 05 | CO | 1I2 | 05A | I0 | I | C | C |  |  |
|  | V1 | **Painting** |  |  | 2006-11-23 | 2008-05-12 |  |  |  |  |  |  |  |  |  |  |  |  |  |  |  |  |  |  |  |  |  |  |  |  |  |  |  |  |  |
| CO05AV1110 |  | 05A Paint Fabricated Pipe Spools |  | 29d | 2006-11-23 A | 2007-07-07 | CK05AU4110 SS+18d, CK05AU4110 FF+12d, PO000V1005, CK05AP0110 FF+6d |  | 29d | 2007-01-06 | 2007-02-07 | 166d | 195d | EBWK 6 Day Egypt Holidays |  | 2006-07-29 |  |  |  | 110 | 0 | 0 | 05A | V1110 | 0 | 05 | CO | 1V1 | 05A | V1 | V |  | C |  |  |
| WO050V1100 |  | 050 Paint | WBS summary | 399d | 2006-11-23 A | 2008-05-12 | EK000YA000 | 32% | 271d | 2007-01-06 | 2008-05-12 | 12d | 289d | EBWK 6 Day Egypt Holidays | Insulation - Construction [29765.5 h] | 2006-07-29 |  |  |  | V10 | 0 | 0 | 05A | V1V10 |  | 05 | CO | V10 | 050 | V1 | V | WC | C |  |  |
| CO05BV1110 |  | 05B Paint Fabricated Pipe Spools |  | 8d | 2007-06-28 | 2007-07-07 | PO000V1005, CK05BP0110 SS+4d, CK05BP0110 FF+6d |  |  |  |  | 214d | 62d | EBWK 6 Day Egypt Holidays |  | 2006-07-29 | 2 | 8 | 8 | 110 | 0 | 2.7 | 05B | V1110 | -6 | 05 | CO | 1V1 | 05B | V1 | V |  | C | 05A |  |
| CO05BV1120 |  | 05B Paint Touch-up - Piping |  | 8d | 2007-10-27 | 2007-11-04 | CO05BP0140 FF+6d |  |  |  |  | 170d | 89d | EBWK 6 Day Egypt Holidays |  | 2006-07-29 | 2 | 8 | 12 | 120 | 0 | 0 | 05B | V1120 | 40 | 05 | CO | 1V2 | 05B | V1 | V |  | C | 05A |  |
| CO05BV1130 |  | 05B Paint Touch-up - Equipment |  | 8d | 2008-02-07 | 2008-02-17 | PO000V1005, CO05BM0110 SS+113d, CO05BA0110 FF |  |  |  |  | 62d | 0d | EBWK 6 Day Egypt Holidays |  | 2006-07-29 | 2 | 8 | 12 | 130 | 0 | 3.7 | 05B | V1130 | 0 | 05 | CO | 1V3 | 05B | V1 | V |  | C | 05A |  |
| CO05AV1120 |  | 05A Paint Touch-up - Piping |  | 29d | 2008-03-11 | 2008-04-13 | CO05AP0140 FF+6d |  |  |  |  | -2d | 45d | EBWK 6 Day Egypt Holidays |  | 2006-07-29 |  |  |  | 120 | 0 | 0 | 05A | V1120 | 40 | 05 | CO | 1V2 | 05A | V1 | V |  | C |  |  |
| CO05AV1130 |  | 05A Paint Touch-up - Equipment |  | 29d | 2008-04-09 | 2008-05-12 | CO05AM0130, PO000V1005, CO05AM0155, CO05AM0145, CO05AM0160 |  |  |  |  | -51d | 0d | EBWK 6 Day Egypt Holidays |  | 2006-07-29 |  |  |  | 130 | 0 | 0 | 05A | V1130 | 40 | 05 | CO | 1V3 | 05A | V1 | V |  | C |  | C1 |
|  | V2 | **Insulation** |  |  | 2008-02-23 | 2008-06-09 |  |  |  |  |  |  |  |  |  |  |  |  |  |  |  |  |  |  |  |  |  |  |  |  |  |  |  |  |  |
| CO05BV2120 |  | 05B Insulate - Piping |  | 18d | 2008-02-23 | 2008-03-15 | CO05BP0150, PO000V2005 FF+30d |  |  |  |  | 63d | 1d | EBWK 6 Day Egypt Holidays |  | 2006-07-29 | 12 | 18 | 24 | 120 | 0 | 3 | 05B | V2120 | 0 | 05 | CO | 1V6 | 05B | V2 | V |  | C | 05A |  |
| WO050V2100 |  | 050 Insulation | WBS summary | 93d | 2008-02-23 | 2008-06-09 | EK000YA000 |  |  |  |  | -12d | 265d | EBWK 6 Day Egypt Holidays | Insulation - Construction [18873 h] | 2006-07-29 |  |  |  | V20 | 0 | 0 | 05A | V2V20 |  | 05 | CO | V20 | 050 | V2 | V | WC | C |  | C5 |
| CO05BV2110 |  | 05B Insulate - Equipment |  | 18d | 2008-02-24 | 2008-03-16 | CO05BM0110 SS+113d, CO05BV1130 FF+24d, PO000V2005 FF+30d, CO05BA0110 FF+24d |  |  |  |  | 62d | 0d | EBWK 6 Day Egypt Holidays |  | 2006-07-29 | 12 | 18 | 24 | 110 | 0 | 0 | 05B | V2110 | 0 | 05 | CO | 1V5 | 05B | V2 | V |  | C | 05A |  |
| CO05AV2120 |  | 05A Insulate - Piping |  | 38d | 2008-03-29 | 2008-05-11 | CO05AP0150 SS+24d, CO05AP0150 FF+24d, PO000V2005 FF+30d |  |  |  |  | -26d | 25d | EBWK 6 Day Egypt Holidays |  | 2006-07-29 |  |  |  | 120 | 0 | 0 | 05A | V2120 | 40 | 05 | CO | 1V6 | 05A | V2 | V |  | C |  |  |
| CO06AV2120 |  | 05A Insulate - Piping |  | 38d | 2008-03-29 | 2008-05-11 | CO05AP0150 SS+24d, CO05AP0150 FF+24d, PO000V2005 FF+30d |  |  |  |  | -26d | 25d | EBWK 6 Day Egypt Holidays |  | 2006-07-29 |  |  |  | 120 | 0 | 0 | 05A | V2120 | 40 | 05 | CO | 1V6 | 05A | V2 | V |  | C |  |  |
| CO05AV2110 |  | 05A Insulate - Equipment |  | 38d | 2008-04-27 | 2008-06-09 | CO05AM0110, CO05AV1130 FF+24d, PO000V2005 FF+30d |  |  |  |  | -51d | 0d | EBWK 6 Day Egypt Holidays |  | 2006-07-29 |  |  |  | 110 | 0 | 0 | 05A | V2110 | 40 | 05 | CO | 1V5 | 05A | V2 | V |  | C |  | C1 |
| CO06AV2110 |  | 05A Insulate - Equipment |  | 38d | 2008-04-27 | 2008-06-09 | CO05AM0110, CO05AV1130 FF+24d, PO000V2005 FF+30d |  |  |  |  | -51d | 0d | EBWK 6 Day Egypt Holidays |  | 2006-07-29 |  |  |  | 110 | 0 | 0 | 05A | V2110 | 40 | 05 | CO | 1V5 | 05A | V2 | V |  | C |  | C1 |

| ID | WBS | Activity | Type | Duration | Start | Finish | Predecessors | Complete | Remaining | Planned start | Planned finish | Total float | Free float | Expected finish | Calendar | Resources | zData Date | Sequence | PCA Criticality Index | PCA Duration Sensitivity | User Defined Field 1 | User Definer Field 2 | user_number1 | EB02 - UNIT | EB01 - RESP | EB06 - WORK OP | EB03 - AREA | EB05 - DISCIPLINE | EB04 - CLASS | EB00 - EPC | EB11 - FLAG | EB21 - Rev 2 Risk Associations | EB22 - Critical Actvities | user_integer2 | EB07 - REQN | EB08 - TAG | EB10 - KEY | EB12 - TEMP |
| --- | --- | --- | --- | --- | --- | --- | --- | --- | --- | --- | --- | --- | --- | --- | --- | --- | --- | --- | --- | --- | --- | --- | --- | --- | --- | --- | --- | --- | --- | --- | --- | --- | --- | --- | --- | --- | --- | --- |
|  | K0 | **Site Prep** |  |  | 2008-03-27 | 2008-06-04 |  |  |  |  |  |  |  |  |  |  |  |  |  |  |  |  |  |  |  |  |  |  |  |  |  |  |  |  |  |  |  |  |
| CO05AK0120 |  | 05A Construct Dike (Retaining Wall) |  | 60d | 2008-03-27 | 2008-06-04 | CO05AM0145 |  |  |  |  | -47d | 0d |  | EBWK 6 Day Egypt Holidays | Site Preparation/ Other Civil - Construction | 2006-07-29 | 150 | 0 | 0 | 05A | C0150 | 10 | 05 | CO | 1K0 | 05A | K0 | K | C |  |  |  |  |  |  |  |  |
| CO05AK0130 |  | 05A Guard Posts, Fence, Gravel... |  | 60d | 2008-03-27 | 2008-06-04 | CO05AK0120 SS, CO05AP0150 FF+18d |  |  |  |  | -47d | 0d |  | EBWK 6 Day Egypt Holidays | Site Preparation/ Other Civil - Construction | 2006-07-29 | 150 | 0 | 0 | 05A | C0150 | 40 | 05 | CO | 1K0 | 05A | K0 | K | C |  |  |  |  |  |  |  |  |
| WO050K0100 |  | 050 Site Prep | WBS summary | 60d | 2008-03-27 | 2008-06-04 | EK000YA002 |  |  |  |  | -47d | 269d |  | EBWK 6 Day Egypt Holidays | Site Preparation/ Other Civil - Construction [30417 h] | 2006-07-29 | 150 | 0 | 0 | 05A | C0150 |  | 05 | CO | K00 | 050 | K0 | K | C | WC |  |  |  |  |  |  |  |
|  | T0 | **Mechanical Completion** |  |  | 2008-02-23 | 2008-06-09 |  |  |  |  |  |  |  |  |  |  |  |  |  |  |  |  |  |  |  |  |  |  |  |  |  |  |  |  |  |  |  |  |
| CO05BT0110 |  | 05B Mechanical Completion | milestone | 0d | 2008-02-23 | 2008-02-23 | CO05BE0130 FF, CO05BI0140 FF, CO05BP0150 FF, CO05BV1120 FF, CO05BV1130 FF, CO05BM0110 FF, CO05BA0110 FF |  |  |  |  | 81d | 19d |  | EBWK 6 Day Egypt Holidays |  | 2006-07-29 | 110 | 0 | 0 | 05B | T0110 | 0 | 05 | CO | 1T1 | 05B | T0 | T | C | C | 05A |  |  |  |  |  |  |
| SC05BT0120 |  | 05B RFSU | milestone | 0d | 2008-03-16 | 2008-03-16 | SC05BI0150 FF, CO05BV2110, CO05BV2120 FF, CO05BT0110 FF |  |  |  |  | 72d | 131d |  | EBWK 7 Day No Holidays |  | 2006-07-29 | 120 | 0 | 0 | 05B | T0120 |  | 05 | SC | 000 | 05B | T0 | T | S | C | 05A |  |  |  |  |  |  |
| CO05AT0110 |  | 05A Mechanical Completion | milestone | 0d | 2008-06-04 | 2008-06-04 | CO05AE0120 FF, CO05AE0130 FF, CO05AI0140 FF, CO05AP0150 FF, CO05AV1120 FF, CO05AV1130 FF, CO05AU3110 FF, CO05AK0130 FF, CO05UP0150 |  |  |  |  | -47d | 4d |  | EBWK 6 Day Egypt Holidays |  | 2006-07-29 | 110 | 0 | 0 | 05A | T0110 | 40 | 05 | CO | 1T1 | 05A | T0 | T | C | C |  | C4 |  |  |  |  |  |
| SC05AT0120 |  | 05A RFSU | milestone | 0d | 2008-06-09 | 2008-06-09 | SC05AI0150 FF, CO05AV2110, CO05AV2120 FF, CO05AT0110 FF, CO06AV2110, CO06AV2120 FF |  |  |  |  | -59d | 0d |  | EBWK 7 Day No Holidays |  | 2006-07-29 | 120 | 0 | 0 | 05A | T0120 |  | 05 | SC | 000 | 05A | T0 | T | S | C |  | C1 |  |  |  |  |  |
|  | T1 | **Commissioning** |  |  |  |  |  |  |  |  |  |  |  |  |  |  |  |  |  |  |  |  |  |  |  |  |  |  |  |  |  |  |  |  |  |  |  |  |
|  | PL | **Pipeline** |  |  |  |  |  |  |  |  |  |  |  |  |  |  |  |  |  |  |  |  |  |  |  |  |  |  |  |  |  |  |  |  |  |  |  |  |
|  | X0 | **Fire & Safety** |  |  |  |  |  |  |  |  |  |  |  |  |  |  |  |  |  |  |  |  |  |  |  |  |  |  |  |  |  |  |  |  |  |  |  |  |
|  | D0 | **Demolition** |  |  |  |  |  |  |  |  |  |  |  |  |  |  |  |  |  |  |  |  |  |  |  |  |  |  |  |  |  |  |  |  |  |  |  |  |
|  | CS | **Plant Services** |  |  |  |  |  |  |  |  |  |  |  |  |  |  |  |  |  |  |  |  |  |  |  |  |  |  |  |  |  |  |  |  |  |  |  |  |
|  | CK | **Home Office Construction** |  |  |  |  |  |  |  |  |  |  |  |  |  |  |  |  |  |  |  |  |  |  |  |  |  |  |  |  |  |  |  |  |  |  |  |  |
|  | CN | **Project Completion** |  |  |  |  |  |  |  |  |  |  |  |  |  |  |  |  |  |  |  |  |  |  |  |  |  |  |  |  |  |  |  |  |  |  |  |  |
|  | C02 | **Construction (Tanks)** |  |  | 2006-08-29 | 2008-04-08 |  |  |  |  |  |  |  |  |  |  |  |  |  |  |  |  |  |  |  |  |  |  |  |  |  |  |  |  |  |  |  |  |
|  | 01 | **Offsites** |  |  | 2006-08-29 | 2007-05-21 |  |  |  |  |  |  |  |  |  |  |  |  |  |  |  |  |  |  |  |  |  |  |  |  |  |  |  |  |  |  |  |  |
|  | M0 | **Mechanical Equipment** |  |  | 2006-08-29 | 2007-05-21 |  |  |  |  |  |  |  |  |  |  |  |  |  |  |  |  |  |  |  |  |  |  |  |  |  |  |  |  |  |  |  |  |
| CO01BM0130 |  | 01B Tank Erection 2001-FA (Water Storage Tank) |  | 130d | 2006-08-29 A | 2007-05-21 | CO01BC0150, PO000MF010 SS+40d, CO000M0110 | 24% | 99d | 2006-08-26 | 2007-02-20 | 9d | 0d | 2007-05-21 | EBWK 6 Day Egypt Holidays |  | 2006-07-29 | 130 | 0 | 0 | 01B | M0130 | 35 | 01 | CT | 1M1 | 01B | MF | M | C | PS |  |  | 125 | MFSUB | 2001FA | T | X |
| CO01BM0140 |  | 01B Tank Erection 2001-FB (Water Storage Tank) |  | 130d | 2006-08-29 A | 2007-04-24 | CO01BC0160, CO01BM0130 SS, PO000MF010 SS+40d, CO000M0110 | 42% | 76d | 2006-08-30 | 2007-02-25 | 32d | 0d | 2007-04-24 | EBWK 6 Day Egypt Holidays |  | 2006-07-29 | 140 | 0 | 0 | 01B | M0140 | 8 | 01 | CT | 1M1 | 01B | MF | M | C | PS |  |  | 125 | MFSUB | 2001FB | T | X |
| WT010M0100 |  | 010 Tank Erection | WBS summary | 134d | 2006-08-29 A | 2007-05-21 | EK000YA002 | 26% | 99d | 2006-08-26 | 2007-02-25 | 9d | 571d |  | EBWK 6 Day Egypt Holidays | Major Equipment - Construction [118160 h] | 2006-07-29 | 140 | 0 | 0 | 01B | M0140 |  | 01 | CT | 1M1 | 01B | MF | M | C | WC |  |  | 125 | MFSUB |  | T | X |
|  | 02 | **Ammonia Plant** |  |  | 2006-09-16 | 2007-02-07 |  |  |  |  |  |  |  |  |  |  |  |  |  |  |  |  |  |  |  |  |  |  |  |  |  |  |  |  |  |  |  |  |
|  | M0 | **Mechanical Equipment** |  |  | 2006-09-16 | 2007-02-07 |  |  |  |  |  |  |  |  |  |  |  |  |  |  |  |  |  |  |  |  |  |  |  |  |  |  |  |  |  |  |  |  |
| CO02KM0130 |  | 02K Tank Erection 114-F (Benfield Solution Tank) |  | 33d | 2006-09-16 A | 2007-02-07 | CO02KC0150, PO000MF010 SS+40d, CO000M0110 | 67% | 11d | 2006-09-16 | 2006-11-13 | 97d | 0d | 2007-02-07 | EBWK 6 Day Egypt Holidays |  | 2006-07-29 | 130 | 0 | 0 | 02K | M0130 | 10 | 02 | CT | 1M1 | 02K | MF | M | C |  |  |  | 120 | MFSUB | 114F | T | X |
| WT020M0100 |  | 020 Tank Erection | WBS summary | 33d | 2006-09-16 A | 2007-02-07 | EK000YA002 | 67% | 11d | 2006-09-16 | 2006-11-13 | 97d | 659d |  | EBWK 6 Day Egypt Holidays | Major Equipment - Construction [2411.42 h] | 2006-07-29 | 130 | 0 | 0 | 02K | M0130 |  | 02 | CT | 1M1 | 02K | MF | M | C | WC |  |  | 120 | MFSUB |  | T | X |

| ID | WBS | Activity | Type | Duration | Start | Finish | Predecessors | Complete | Remaining | Planned start | Planned finish | Total float | Free float | Expected finish | Calendar | Resources | zData Date | Sequence | PCA Criticality Index | PCA Duration Sensitivity | User Defined Field 1 | User Definer Field 2 | user_integer2 | user_number1 | EB02 - UNIT | EB01 - RESP | EB06 - WORK OP | EB03 - AREA | EB05 - DISCIPLINE | EB08 - TAG | EB10 - KEY | EB04 - CLASS | EB11 - FLAG | EB12 - TEMP | EB00 - EPC | EB14 - RISK | EB22 - Critical Actvities | EB17 - Suffix |
| --- | --- | --- | --- | --- | --- | --- | --- | --- | --- | --- | --- | --- | --- | --- | --- | --- | --- | --- | --- | --- | --- | --- | --- | --- | --- | --- | --- | --- | --- | --- | --- | --- | --- | --- | --- | --- | --- | --- |
|  | 03 | **Utilities** |  |  | 2006-08-29 | 2007-02-11 |  |  |  |  |  |  |  |  |  |  |  |  |  |  |  |  |  |  |  |  |  |  |  |  |  |  |  |  |  |  |  |  |
|  | M0 | **Mechanical Equipment** |  |  | 2006-08-29 | 2007-02-11 |  |  |  |  |  |  |  |  |  |  |  |  |  |  |  |  |  |  |  |  |  |  |  |  |  |  |  |  |  |  |  |  |
| CO03DM0145 |  | 03D Tank Erection 2002-F (Demin Water Tank) |  | 70d | 2006-08-29 A | 2007-02-11 | PO000MF010 SS+40d, CO03DC0110 FS+11d, CO000M0110 | 80% | 14d | 2006-08-30 | 2006-12-10 | 105d | 0d | 2007-02-11 | EBWK 6 Day Egypt Holidays |  | 2006-07-29 | 150 | 0 | 0 | 03D | M0150 | 150 | 19 | 03 | CT | 1M1 | 03D | MF | 2002F | T | M | PS | X | C |  |  |  |
| WT030M0100 |  | 030 Tank Erection | WBS summary | 70d | 2006-08-29 A | 2007-02-11 | EK000YA002 | 80% | 14d | 2006-08-30 | 2006-12-10 | 105d | 656d |  | EBWK 6 Day Egypt Holidays | Major Equipment - Construction [9109.15 h] | 2006-07-29 | 150 | 0 | 0 | 03D | M0150 | 150 |  | 03 | CT | 1M1 | 03D | MF |  | T | M | WC | X | C |  |  |  |
|  | 05 | **Dock / Storage** |  |  | 2007-07-31 | 2008-04-08 |  |  |  |  |  |  |  |  |  |  |  |  |  |  |  |  |  |  |  |  |  |  |  |  |  |  |  |  |  |  |  |  |
|  | M0 | **Mechanical Equipment** |  |  | 2007-07-31 | 2008-04-08 |  |  |  |  |  |  |  |  |  |  |  |  |  |  |  |  |  |  |  |  |  |  |  |  |  |  |  |  |  |  |  |  |
| CO05AM0145 |  | 05A Tank Erection 2101-F (Ammonia Storage Tank) |  | 182d | 2007-07-31 | 2008-03-26 | PO000MF010 SS+40d, CO05AC0160 FS+12d, CO000M0110, CO02KM0130, CO01BM0130, CO01BM0140, PK000PIA4L FF |  |  |  |  | -51d | 0d |  | EBWK 6 Day Egypt Holidays |  | 2006-07-29 | 150 | 0 | 0 | 03D | M0150 | 150 | 40 | 05 | CT | 1M1 | 05A | MF | 2101F | T | M |  | X | C | 03 | C1 |  |
| WT050M0100 |  | 05A Tank Erection | WBS summary | 193d | 2007-07-31 | 2008-04-08 | EK000YA002 |  |  |  |  | -51d | 318d |  | EBWK 6 Day Egypt Holidays | Major Equipment - Construction [298558 h] | 2006-07-29 | 150 | 0 | 0 | 03D | M0150 | 150 |  | 05 | CT | 1M1 | 05A | MF |  | T | M | WC | X | C | 03 |  |  |
| CO05AM0155 |  | 05A Tank Erection 2102-F (Ammonia Storage Tank) |  | 182d | 2007-08-13 | 2008-04-08 | PO000MF010 SS+40d, CO05AC0165 FS+12d, CO000M0110, CO05AM0145 SS+11d, CO01BM0140, CO03DM0145, CO01BM0130, PK000PIA4L FF |  |  |  |  | -51d | 0d |  | EBWK 6 Day Egypt Holidays |  | 2006-07-29 | 150 | 0 | 0 | 03D | M0150 | 150 | 40 | 05 | CT | 1M1 | 05A | MF | 2102F | T | M |  | X | C | 03 | C1 |  |
| CO05AM0160 |  | 05A Tank Erection 2105-F (Fire Water Tank) |  | 33d | 2007-09-22 | 2007-11-15 | PO000MF010 SS+40d, CO000M0110, CO01BM0130, EK000MF32D FS+30d, CO01BM0140, CO05AM0155 SS+30d |  |  |  |  | -29d | 0d |  | EBWK 6 Day Egypt Holidays |  | 2006-07-29 | 150 | 0 | 0 | 03D | M0150 | 150 | 40 | 05 | CT | 1M1 | 05A | MF | 2105F | T | M |  | X | C | 03 | C2 |  |
|  | C32 | **Construction (Cathodic Protection)** |  |  | 2007-06-04 | 2007-11-16 |  |  |  |  |  |  |  |  |  |  |  |  |  |  |  |  |  |  |  |  |  |  |  |  |  |  |  |  |  |  |  |  |
|  | 00 | **Common** |  |  | 2007-06-04 | 2007-11-16 |  |  |  |  |  |  |  |  |  |  |  |  |  |  |  |  |  |  |  |  |  |  |  |  |  |  |  |  |  |  |  |  |
|  | U3 | **U/G Electrical** |  |  | 2007-06-04 | 2007-11-16 |  |  |  |  |  |  |  |  |  |  |  |  |  |  |  |  |  |  |  |  |  |  |  |  |  |  |  |  |  |  |  |  |
| CO000E0500 |  | Cathodic Protection - Installation |  | 120d | 2007-06-04 | 2007-11-16 | EK020ELEG6 |  |  |  |  | 6d | 0d |  | EBWK - Global |  | 2006-07-29 |  | 0 | 0 |  |  |  | 25 | 00 | CO | 1U2 | 000 | U3 |  |  | E |  |  | C |  |  | E3B3 |
| WP000U3100 |  | Cathodic Protection | WBS summary | 120d | 2007-06-04 | 2007-11-16 | EK000YA002 |  |  |  |  | 6d | 367d |  | EBWK - Global |  | 2006-07-29 |  | 0 | 0 |  |  |  |  | 00 | CO | 1U2 | 000 | U3 |  |  | E | WC |  | C |  |  | E3B3 |
|  | Units | **Units (Save)** |  |  |  |  |  |  |  |  |  |  |  |  |  |  |  |  |  |  |  |  |  |  |  |  |  |  |  |  |  |  |  |  |  |  |  |  |
|  | 00 | **Common** |  |  |  |  |  |  |  |  |  |  |  |  |  |  |  |  |  |  |  |  |  |  |  |  |  |  |  |  |  |  |  |  |  |  |  |  |
|  | 01 | **Offsites** |  |  |  |  |  |  |  |  |  |  |  |  |  |  |  |  |  |  |  |  |  |  |  |  |  |  |  |  |  |  |  |  |  |  |  |  |
|  | 02 | **Ammonia Plant** |  |  |  |  |  |  |  |  |  |  |  |  |  |  |  |  |  |  |  |  |  |  |  |  |  |  |  |  |  |  |  |  |  |  |  |  |
|  | 03 | **Utility Plant** |  |  |  |  |  |  |  |  |  |  |  |  |  |  |  |  |  |  |  |  |  |  |  |  |  |  |  |  |  |  |  |  |  |  |  |  |
|  | 04 | **Corridor** |  |  |  |  |  |  |  |  |  |  |  |  |  |  |  |  |  |  |  |  |  |  |  |  |  |  |  |  |  |  |  |  |  |  |  |  |
|  | 05 | **Dock / Storage** |  |  |  |  |  |  |  |  |  |  |  |  |  |  |  |  |  |  |  |  |  |  |  |  |  |  |  |  |  |  |  |  |  |  |  |  |
|  | Areas | **Area Details (Save)** |  |  |  |  |  |  |  |  |  |  |  |  |  |  |  |  |  |  |  |  |  |  |  |  |  |  |  |  |  |  |  |  |  |  |  |  |
|  | 000 | **Project - Common** |  |  |  |  |  |  |  |  |  |  |  |  |  |  |  |  |  |  |  |  |  |  |  |  |  |  |  |  |  |  |  |  |  |  |  |  |
|  | 010 | **Offsites - General** |  |  |  |  |  |  |  |  |  |  |  |  |  |  |  |  |  |  |  |  |  |  |  |  |  |  |  |  |  |  |  |  |  |  |  |  |
|  | 01A | **Evaporation Pond** |  |  |  |  |  |  |  |  |  |  |  |  |  |  |  |  |  |  |  |  |  |  |  |  |  |  |  |  |  |  |  |  |  |  |  |  |
|  | 01B | **Water Storage** |  |  |  |  |  |  |  |  |  |  |  |  |  |  |  |  |  |  |  |  |  |  |  |  |  |  |  |  |  |  |  |  |  |  |  |  |
|  | 01C | **Water Treatment** |  |  |  |  |  |  |  |  |  |  |  |  |  |  |  |  |  |  |  |  |  |  |  |  |  |  |  |  |  |  |  |  |  |  |  |  |
|  | 01D | **Cooling Tower** |  |  |  |  |  |  |  |  |  |  |  |  |  |  |  |  |  |  |  |  |  |  |  |  |  |  |  |  |  |  |  |  |  |  |  |  |
|  | 01E | **Warehouse / Maintenance** |  |  |  |  |  |  |  |  |  |  |  |  |  |  |  |  |  |  |  |  |  |  |  |  |  |  |  |  |  |  |  |  |  |  |  |  |
|  | 01F | **Admin & Canteen** |  |  |  |  |  |  |  |  |  |  |  |  |  |  |  |  |  |  |  |  |  |  |  |  |  |  |  |  |  |  |  |  |  |  |  |  |
|  | 01G | **Control Building** |  |  |  |  |  |  |  |  |  |  |  |  |  |  |  |  |  |  |  |  |  |  |  |  |  |  |  |  |  |  |  |  |  |  |  |  |
|  | 01H | **Substation & Electrical Underground** |  |  |  |  |  |  |  |  |  |  |  |  |  |  |  |  |  |  |  |  |  |  |  |  |  |  |  |  |  |  |  |  |  |  |  |  |
|  | 01J | **Offsites** |  |  |  |  |  |  |  |  |  |  |  |  |  |  |  |  |  |  |  |  |  |  |  |  |  |  |  |  |  |  |  |  |  |  |  |  |
|  | 01U | **Offsites - Underground** |  |  |  |  |  |  |  |  |  |  |  |  |  |  |  |  |  |  |  |  |  |  |  |  |  |  |  |  |  |  |  |  |  |  |  |  |
|  | 01Y | **Piperack** |  |  |  |  |  |  |  |  |  |  |  |  |  |  |  |  |  |  |  |  |  |  |  |  |  |  |  |  |  |  |  |  |  |  |  |  |
|  | 020 | **Ammonia - General** |  |  |  |  |  |  |  |  |  |  |  |  |  |  |  |  |  |  |  |  |  |  |  |  |  |  |  |  |  |  |  |  |  |  |  |  |
|  | 02A | **Ammonia Distillation Area** |  |  |  |  |  |  |  |  |  |  |  |  |  |  |  |  |  |  |  |  |  |  |  |  |  |  |  |  |  |  |  |  |  |  |  |  |
|  | 02B | **Purge Gas Recovery Area** |  |  |  |  |  |  |  |  |  |  |  |  |  |  |  |  |  |  |  |  |  |  |  |  |  |  |  |  |  |  |  |  |  |  |  |  |
|  | 02C | **Synthesis Gas & Ammonia Refrig. Compressors Area** |  |  |  |  |  |  |  |  |  |  |  |  |  |  |  |  |  |  |  |  |  |  |  |  |  |  |  |  |  |  |  |  |  |  |  |  |
|  | 02D | **Ammonia Refrigerant Area** |  |  |  |  |  |  |  |  |  |  |  |  |  |  |  |  |  |  |  |  |  |  |  |  |  |  |  |  |  |  |  |  |  |  |  |  |
|  | 02E | **Molecular Sieve Drier, Methanator & Syngas Suction Area** |  |  |  |  |  |  |  |  |  |  |  |  |  |  |  |  |  |  |  |  |  |  |  |  |  |  |  |  |  |  |  |  |  |  |  |  |
|  | 02F | **H.P.B.F.W & Demin Water Pump Area** |  |  |  |  |  |  |  |  |  |  |  |  |  |  |  |  |  |  |  |  |  |  |  |  |  |  |  |  |  |  |  |  |  |  |  |  |
|  | 02G | **Air & Feed Gas Compressor Area & Generator** |  |  |  |  |  |  |  |  |  |  |  |  |  |  |  |  |  |  |  |  |  |  |  |  |  |  |  |  |  |  |  |  |  |  |  |  |
|  | 02H | **Primary Reformer Area** |  |  |  |  |  |  |  |  |  |  |  |  |  |  |  |  |  |  |  |  |  |  |  |  |  |  |  |  |  |  |  |  |  |  |  |  |
|  | 02J | **High Temp. Shift Converter & Desulfurizer Area** |  |  |  |  |  |  |  |  |  |  |  |  |  |  |  |  |  |  |  |  |  |  |  |  |  |  |  |  |  |  |  |  |  |  |  |  |
|  | 02K | **Benfield Solution Area** |  |  |  |  |  |  |  |  |  |  |  |  |  |  |  |  |  |  |  |  |  |  |  |  |  |  |  |  |  |  |  |  |  |  |  |  |
|  | 02L | **CO2 Absorber, Stripper & Raw Gas Separator Area** |  |  |  |  |  |  |  |  |  |  |  |  |  |  |  |  |  |  |  |  |  |  |  |  |  |  |  |  |  |  |  |  |  |  |  |  |
|  | 02M | **Ammonia Synthesis Converter & Start -up Heater Area** |  |  |  |  |  |  |  |  |  |  |  |  |  |  |  |  |  |  |  |  |  |  |  |  |  |  |  |  |  |  |  |  |  |  |  |  |
|  | 02N | **Ammonia Chiller Area** |  |  |  |  |  |  |  |  |  |  |  |  |  |  |  |  |  |  |  |  |  |  |  |  |  |  |  |  |  |  |  |  |  |  |  |  |
|  | 02P | **Deaerator Area** |  |  |  |  |  |  |  |  |  |  |  |  |  |  |  |  |  |  |  |  |  |  |  |  |  |  |  |  |  |  |  |  |  |  |  |  |
|  | 02Q | **Steam Drum Area** |  |  |  |  |  |  |  |  |  |  |  |  |  |  |  |  |  |  |  |  |  |  |  |  |  |  |  |  |  |  |  |  |  |  |  |  |
|  | 02U | **Ammonia - Underground** |  |  |  |  |  |  |  |  |  |  |  |  |  |  |  |  |  |  |  |  |  |  |  |  |  |  |  |  |  |  |  |  |  |  |  |  |
|  | 02Y | **Piperack (Yard) Area** |  |  |  |  |  |  |  |  |  |  |  |  |  |  |  |  |  |  |  |  |  |  |  |  |  |  |  |  |  |  |  |  |  |  |  |  |
|  | 030 | **Utility Plant - General** |  |  |  |  |  |  |  |  |  |  |  |  |  |  |  |  |  |  |  |  |  |  |  |  |  |  |  |  |  |  |  |  |  |  |  |  |
|  | 03A | **Plant & Instrument Air & Nitrogen Area** |  |  |  |  |  |  |  |  |  |  |  |  |  |  |  |  |  |  |  |  |  |  |  |  |  |  |  |  |  |  |  |  |  |  |  |  |
|  | 03B | **Sanitary Treatment & Waste Water Area** |  |  |  |  |  |  |  |  |  |  |  |  |  |  |  |  |  |  |  |  |  |  |  |  |  |  |  |  |  |  |  |  |  |  |  |  |
|  | 03C | **Caustic & Sulfuric Acid Storage Area** |  |  |  |  |  |  |  |  |  |  |  |  |  |  |  |  |  |  |  |  |  |  |  |  |  |  |  |  |  |  |  |  |  |  |  |  |
|  | 03D | **Demin. Water Area** |  |  |  |  |  |  |  |  |  |  |  |  |  |  |  |  |  |  |  |  |  |  |  |  |  |  |  |  |  |  |  |  |  |  |  |  |
|  | 03E | **Water Treatment Area** |  |  |  |  |  |  |  |  |  |  |  |  |  |  |  |  |  |  |  |  |  |  |  |  |  |  |  |  |  |  |  |  |  |  |  |  |
|  | 03F | **Package Boiler Area** |  |  |  |  |  |  |  |  |  |  |  |  |  |  |  |  |  |  |  |  |  |  |  |  |  |  |  |  |  |  |  |  |  |  |  |  |
|  | 03U | **Utility Plant - Underground** |  |  |  |  |  |  |  |  |  |  |  |  |  |  |  |  |  |  |  |  |  |  |  |  |  |  |  |  |  |  |  |  |  |  |  |  |
|  | 03Y | **Sleeper Area** |  |  |  |  |  |  |  |  |  |  |  |  |  |  |  |  |  |  |  |  |  |  |  |  |  |  |  |  |  |  |  |  |  |  |  |  |
|  | 040 | **Corridor - General** |  |  |  |  |  |  |  |  |  |  |  |  |  |  |  |  |  |  |  |  |  |  |  |  |  |  |  |  |  |  |  |  |  |  |  |  |
|  | 04A | **Corridor** |  |  |  |  |  |  |  |  |  |  |  |  |  |  |  |  |  |  |  |  |  |  |  |  |  |  |  |  |  |  |  |  |  |  |  |  |
|  | 04U | **Corridor - Underground** |  |  |  |  |  |  |  |  |  |  |  |  |  |  |  |  |  |  |  |  |  |  |  |  |  |  |  |  |  |  |  |  |  |  |  |  |
|  | 050 | **Dock / Storage - General** |  |  |  |  |  |  |  |  |  |  |  |  |  |  |  |  |  |  |  |  |  |  |  |  |  |  |  |  |  |  |  |  |  |  |  |  |
|  | 05A | **Ammonia Storage** |  |  |  |  |  |  |  |  |  |  |  |  |  |  |  |  |  |  |  |  |  |  |  |  |  |  |  |  |  |  |  |  |  |  |  |  |
|  | 05B | **Dock** |  |  |  |  |  |  |  |  |  |  |  |  |  |  |  |  |  |  |  |  |  |  |  |  |  |  |  |  |  |  |  |  |  |  |  |  |
|  | 05U | **Dock / Storage - Underground** |  |  |  |  |  |  |  |  |  |  |  |  |  |  |  |  |  |  |  |  |  |  |  |  |  |  |  |  |  |  |  |  |  |  |  |  |

| WBS | Activity |
| --- | --- |
| Proc Groups | **Procurement (Save)** |
| C0 | **Procurement - Concrete/Piling** |
| S0 | **Procurement - Structural Steel** |
| U3 | **Procurement - U/G Electrical Materials** |
| U4 | **Procurement - U/G Piping Materials** |
| EE | **Procurement - Electrical Equipment** |
| MB | **Procurement - Furnaces** |
| MC | **Procurement - Exchangers** |
| MD | **Procurement - Towers & Drums** |
| MF | **Procurement - Tanks** |
| MJ | **Procurement - Machinery** |
| ML | **Procurement - Special Equipment** |
| MV | **Procurement - Solids Handling Equipment** |
| MU | **Procurement - Utility Equipment** |
| P0 | **Procurement - A/G Piping Materials** |
| E0 | **Procurement - A/G Electrical Materials** |
| I0 | **Procurement - Instruments** |
| I1 | **Procurement - Transmitters** |
| I2 | **Procurement - Instrument Valves** |
| I3 | **Procurement - DCS** |
| I4 | **Procurement - Analyzers** |
| Eng Groups | **Work Group Details (Save)** |
| AR | **Architecture Engineering** |
| PE | **Project Engineering** |
| PS | **Planning & Scheduling** |
| QM | **Quality Mgmt.** |
| CE | **Chief Engineering** |
| CV | **Civil Engineering** |
| EL | **Electrical Engineering** |
| EV | **Environmental Engineering** |
| FP | **Fire Protection Engineering** |
| GE | **General Engineering (All Disciplines)** |
| IC | **Control Sytems Engineering** |
| MB | **Furnaces & Flares Engineering** |
| MC | **Exchangers Engineering** |
| MD | **Vessels Engineering** |
| MJ | **Machinery Engineering** |
| PI | **Piping Engineering** |
| PR | **Process Engineering** |
| SE | **Safety Engineering** |
| SY | **Systems Engineering** |
| Construction Groups | **Construction Groups (Save)** |
| A0 | **Buildings** |
| C0 | **Concrete / Piling** |
| CK | **Home Office Construction** |
| CN | **Project Completion** |
| CS | **Plant Services** |
| D0 | **Demolition** |
| E0 | **A/G Electrical** |
| I0 | **Instrumentation** |
| K0 | **Site Prep** |
| M0 | **Mechanical Equipment** |
| P0 | **A/G Piping** |
| PL | **Pipeline** |
| S0 | **Structural / Misc. Steel** |
| T0 | **Mechanical Completion** |
| U3 | **U/G Electrical** |
| U4 | **U/G Piping** |
| V1 | **Painting** |
| V2 | **Insulation** |
| X0 | **Fire & Safety** |
| ebic start-up R3 | **ebic start-up R3** |
| 1 | **Home Office Deliverables and Tasks** |
| 2 | **Precommissioning / Commissioning / Start-Up / Test Run** |
| 3 | **Staffing** |

## Activity codes

| Code | Value | Meaning |
| --- | --- | --- |
| EB00 - EPC | C | Construction |
| EB00 - EPC | E | Engineering |
| EB00 - EPC | P | Procurement |
| EB00 - EPC | S | Commissioning, Startup, & Performance Test |
| EB00 - EPC | X | Other |
| EB01 - RESP | CK | Construction - KBR Site Work |
| EB01 - RESP | CO | Construction - OCI Site Work |
| EB01 - RESP | CT | Construction - DSD Tank Erection |
| EB01 - RESP | EK | Engineering - HOC |
| EB01 - RESP | EM | Engineering - MOC |
| EB01 - RESP | PK | Procurement - HOC |
| EB01 - RESP | PO | Procurement - OCI |
| EB01 - RESP | SC | Commissioning, Startup, & Performance Testing |
| EB01 - RESP | XE | Client - EBIC |
| EB02 - UNIT | 00 | General - All Units |
| EB02 - UNIT | 01 | Offsites |
| EB02 - UNIT | 02 | Ammonia |
| EB02 - UNIT | 03 | Utility Plant |
| EB02 - UNIT | 04 | Corridor |
| EB02 - UNIT | 05 | Dock / Storage |
| EB03 - AREA | 000 | Project General Area |
| EB03 - AREA | 010 | (01) Offsites - General |
| EB03 - AREA | 01A | (01A) Evaporation Pond Area |
| EB03 - AREA | 01B | (01B) Water Storage Area |
| EB03 - AREA | 01C | (01C) Water Treatment Area |
| EB03 - AREA | 01D | (01D) Cooling Tower Area |
| EB03 - AREA | 01E | (01E) Guard House Area |
| EB03 - AREA | 01F | (01F) Mosque Area |
| EB03 - AREA | 01G | (01G) Control Building Area |
| EB03 - AREA | 01H | (01H) Transformer Area, Substation & Electrical Undergroud |
| EB03 - AREA | 01J | (01J) Offsites Area |
| EB03 - AREA | 01K | (01K) Run Off Area |
| EB03 - AREA | 01U | (01U) Offsites - Underground |
| EB03 - AREA | 01Y | (01Y) Piperack Area |
| EB03 - AREA | 020 | (02) Ammonia - General |
| EB03 - AREA | 02A | (02A) Ammonia Distillation Area |
| EB03 - AREA | 02B | (02B) Purge Gas Recovery Area |
| EB03 - AREA | 02C | (02C) Synthesis Gas & Ammonia Refrig Compr Area |
| EB03 - AREA | 02D | (02D) Ammonia Chiller Area |
| EB03 - AREA | 02E | (02E) Molecular Sieve Drier, Methanator & Syngas |
| EB03 - AREA | 02F | (02F) HPBFW & Demin Water Area |
| EB03 - AREA | 02G | (02G) Air & Feed Gas Compressors Area |
| EB03 - AREA | 02H | (02H) Primary Reformer Area |
| EB03 - AREA | 02J | (02J) High Temp Shift Converter & Desulferizer |
| EB03 - AREA | 02K | (02K) Benfield Solution Area |
| EB03 - AREA | 02L | (02L) CO2 Absorber, Stripper & Raw Gas Separator |
| EB03 - AREA | 02M | (02M) Ammonia Synthesis Converter/Startup Heater |
| EB03 - AREA | 02N | (02N) Ammonia Chiller Area |
| EB03 - AREA | 02P | (02P) Deaerator Area |
| EB03 - AREA | 02Q | (02Q) Steam Drum Area |
| EB03 - AREA | 02U | (02U) Ammonia - Underground |
| EB03 - AREA | 02Y | (02Y) Piperack (Yard) Area |
| EB03 - AREA | 030 | (03) Utility Plant - General |
| EB03 - AREA | 03A | (03A) Plant & Instrument Air & Nitrogen Area |
| EB03 - AREA | 03B | (03B) Sanitary Treatment & Waste Water Area |
| EB03 - AREA | 03C | (03C) Caustic & Sulfuric Acid Storage Area |
| EB03 - AREA | 03D | (03D) Demin Water Area |
| EB03 - AREA | 03E | (03E) Water Treatment Area |
| EB03 - AREA | 03F | (03F) Package Boiler Area |
| EB03 - AREA | 03U | (03U) Utility Plant - Underground |
| EB03 - AREA | 03Y | (03Y) Sleeper Rack |
| EB03 - AREA | 04A | (04A) Corridor Area |
| EB03 - AREA | 050 | (05) Dock/Storage - General |
| EB03 - AREA | 05A | (05A) Ammonia Storage Area |
| EB03 - AREA | 05B | (05B) Dock Area |
| EB03 - AREA | 05U | (05U) Dock/Storage - Underground |
| EB04 - CLASS | A | Buildings |
| EB04 - CLASS | C | Civil / Concrete |
| EB04 - CLASS | E | Electrical |
| EB04 - CLASS | G | General / Milestones |
| EB04 - CLASS | I | Instruments |
| EB04 - CLASS | K | Site Prep |
| EB04 - CLASS | M | Mechanical Equipment |
| EB04 - CLASS | MB | Furnaces & Flares |
| EB04 - CLASS | MC | Exchangers |
| EB04 - CLASS | MD | Towers & Vessels |
| EB04 - CLASS | MF | Drums & Tanks |
| EB04 - CLASS | MJ | Rotating Equipment |
| EB04 - CLASS | ML | Special Equipment |
| EB04 - CLASS | MU | Utility Equipment |
| EB04 - CLASS | P | Piping |
| EB04 - CLASS | S | Steel |
| EB04 - CLASS | T | Mechanical Completion / Turnovers |
| EB04 - CLASS | U | Underground |
| EB04 - CLASS | V | Coatings and Coverings |
| EB04 - CLASS | X | Other |
| EB04 - CLASS | Y | Process / Systems |
| EB04 - CLASS | Z | Fire & Safety |
| EB05 - DISCIPLINE | A0 | Erect Buildings |
| EB05 - DISCIPLINE | AR | Architecture |
| EB05 - DISCIPLINE | C0 | Concrete / Piling |
| EB05 - DISCIPLINE | CE | Office of Chief Engineer |
| EB05 - DISCIPLINE | CK | Home Office Construction |
| EB05 - DISCIPLINE | CS | Plant Services |
| EB05 - DISCIPLINE | CV | Civil Design |
| EB05 - DISCIPLINE | E0 | A/G Electrical |
| EB05 - DISCIPLINE | EB | EBIC Client |
| EB05 - DISCIPLINE | EL | Electrical Design |
| EB05 - DISCIPLINE | EV | Environmental |
| EB05 - DISCIPLINE | FA | Finance |
| EB05 - DISCIPLINE | FP | Fire Protection |
| EB05 - DISCIPLINE | GE | General (for all Disciplines) |
| EB05 - DISCIPLINE | I0 | Instrument |
| EB05 - DISCIPLINE | IC | Control Systems |
| EB05 - DISCIPLINE | IM | Information Management |
| EB05 - DISCIPLINE | K0 | Site Prep |
| EB05 - DISCIPLINE | M0 | Major Equipment |
| EB05 - DISCIPLINE | MB | Furnaces & Flares |
| EB05 - DISCIPLINE | MC | Exchangers |
| EB05 - DISCIPLINE | MD | Vessels |
| EB05 - DISCIPLINE | MF | Tanks |
| EB05 - DISCIPLINE | MJ | Machinery |
| EB05 - DISCIPLINE | MU | Utility Equipment |
| EB05 - DISCIPLINE | P0 | A/G Pipe |
| EB05 - DISCIPLINE | PA | Process (Vessel Analytical) |
| EB05 - DISCIPLINE | PC | Project Controls |
| EB05 - DISCIPLINE | PE | Project Engineering |
| EB05 - DISCIPLINE | PI | Piping Engineering |
| EB05 - DISCIPLINE | PK | Procurement |
| EB05 - DISCIPLINE | PM | Project Management |
| EB05 - DISCIPLINE | PR | Process |
| EB05 - DISCIPLINE | PS | Planning/Scheduling |
| EB05 - DISCIPLINE | QM | Quality Management |
| EB05 - DISCIPLINE | S0 | Structural Steel |
| EB05 - DISCIPLINE | SY | Systems |
| EB05 - DISCIPLINE | T0 | Mechanical Completion |
| EB05 - DISCIPLINE | U3 | U/G Electrical |
| EB05 - DISCIPLINE | U4 | U/G Piping |
| EB05 - DISCIPLINE | V1 | Paint |
| EB05 - DISCIPLINE | V2 | Insulation |
| EB05 - DISCIPLINE | YA | Major Milestones |
| EB06 - WORK OP | 000 | Project Milestones |
| EB06 - WORK OP | 1A1 | Buildings |
| EB06 - WORK OP | 1C1 | Major Foundations (Eqp & Structural) |
| EB06 - WORK OP | 1C2 | Misc. Foundations |
| EB06 - WORK OP | 1C3 | Paving |
| EB06 - WORK OP | 1E0 | Electrical |
| EB06 - WORK OP | 1E1 | Power/Control JB's , Stands, Tray & Cable |
| EB06 - WORK OP | 1E2 | Lighting JB's, Stands, Tray, & Cable |
| EB06 - WORK OP | 1E3 | Lighting Fixture Installation/Termination |
| EB06 - WORK OP | 1I1 | Instrument JB's, Field Instr, Tray, Cable |
| EB06 - WORK OP | 1I2 | Install In Line Instruments |
| EB06 - WORK OP | 1I3 | Continuity Testing |
| EB06 - WORK OP | 1K0 | Site Prep |
| EB06 - WORK OP | 1M1 | Erect Equipment |
| EB06 - WORK OP | 1P1 | A/G Pipe Spool Fabrication |
| EB06 - WORK OP | 1P2 | LB Pipe Erection |
| EB06 - WORK OP | 1P3 | SB Pipe Erection |
| EB06 - WORK OP | 1P4 | Punchlist / Test Pipe |
| EB06 - WORK OP | 1S1 | Structural Steel |
| EB06 - WORK OP | 1S2 | Misc. Steel |
| EB06 - WORK OP | 1T1 | Mechanical Completion |
| EB06 - WORK OP | 1U1 | U/G Pipe Spool Fabrication |
| EB06 - WORK OP | 1U2 | U/G Piping Installation |
| EB06 - WORK OP | 1U3 | U/G Earthing Installation |
| EB06 - WORK OP | 1V1 | Paint Fabricated Pipe Spools |
| EB06 - WORK OP | 1V2 | Paint Touch-up - Piping |
| EB06 - WORK OP | 1V3 | Paint Touch-up - Equipment |
| EB06 - WORK OP | 1V5 | Insulate - Equipment |
| EB06 - WORK OP | 1V6 | Insulate - Pipe |
| EB06 - WORK OP | C00 | Concrete / Piling |
| EB06 - WORK OP | C20 | Concrete Pipe Rack, Structures, Bldgs.,Boxes etc |
| EB06 - WORK OP | C30 | Foundations for Equipment |
| EB06 - WORK OP | C40 | Foundations for Steel Pipe Racks |
| EB06 - WORK OP | C50 | Foundations for Steel Structure or Steel Bldgs |
| EB06 - WORK OP | C60 | Misc. Foundations |
| EB06 - WORK OP | E00 | Above Ground Electrical |
| EB06 - WORK OP | EA1 | One Line Diagrams - Overall |
| EB06 - WORK OP | EA2 | One Line Diagrams - Switchgear |
| EB06 - WORK OP | EA3 | One Line Diagrams - MCC & Power |
| EB06 - WORK OP | EB0 | Electrical Load List |
| EB06 - WORK OP | EC1 | Load Summary |
| EB06 - WORK OP | EC2 | Short Circuit, Load Flow, Motor Starting |
| EB06 - WORK OP | EC3 | Protective Device Coordination |
| EB06 - WORK OP | EC4 | Conductor Ampacity, Pulling Tensions |
| EB06 - WORK OP | ED0 | Substation Building Layouts |
| EB06 - WORK OP | EE0 | Electrical Tie-in List |
| EB06 - WORK OP | EF1 | Prefabricated Assemblies |
| EB06 - WORK OP | EF5 | Transformers & Reactors |
| EB06 - WORK OP | EF6 | DC & Battery Backed Systems |
| EB06 - WORK OP | EG2 | Cathodic Protection |
| EB06 - WORK OP | EH2 | Grounding Plans |
| EB06 - WORK OP | EJ1 | Lighting - Installation Details |
| EB06 - WORK OP | EJ2 | Lighting - Plans |
| EB06 - WORK OP | EK1 | A/G Power - Installation Details |
| EB06 - WORK OP | EK2 | AG Power - Plans |
| EB06 - WORK OP | EL2 | Underground Power Plans |
| EB06 - WORK OP | EM1 | Cable & Raceway Schedule |
| EB06 - WORK OP | EM2 | Cable & Raceway - Spreadsheet |
| EB06 - WORK OP | EN1 | LV Control Schematic & Wiring Diagrams |
| EB06 - WORK OP | EN2 | MV Control Schematic & Wiring Diagrams |
| EB06 - WORK OP | EN3 | Equipment Interconnections Diagrams |
| EB06 - WORK OP | EV3 | Noise & Vibrations |
| EB06 - WORK OP | G10 | General & Administrative |
| EB06 - WORK OP | G20 | Standards & Specificaions |
| EB06 - WORK OP | G30 | Estimating & Tracking/Trending |
| EB06 - WORK OP | G40 | Work Group Specified Activity, Study etc. |
| EB06 - WORK OP | G60 | Subcontracts & Bulk Marl. Purchase |
| EB06 - WORK OP | G70 | Field Coordination/Interface |
| EB06 - WORK OP | I00 | Instrumentation |
| EB06 - WORK OP | I13 | Trasmitters, Switches, Recorders |
| EB06 - WORK OP | I16 | Guages, Temp. Elements & Accessories |
| EB06 - WORK OP | I21 | Flow Measuring Elements |
| EB06 - WORK OP | I22 | Engineered Valves |
| EB06 - WORK OP | I35 | Electronic Controls Systems |
| EB06 - WORK OP | I44 | Analyzers |
| EB06 - WORK OP | ID1 | Instrument Location Plans |
| EB06 - WORK OP | ID2 | Instrument Installation Details |
| EB06 - WORK OP | ID3 | Instrument Wiring |
| EB06 - WORK OP | ID4 | Instrumant Loop Diagrams |
| EB06 - WORK OP | ID5 | Instrument Index |
| EB06 - WORK OP | K00 | Site Prep/Improvements |
| EB06 - WORK OP | K10 | Site Prep |
| EB06 - WORK OP | K30 | Finished Grading, Roads and Paving |
| EB06 - WORK OP | M00 | Erect Major Equipment |
| EB06 - WORK OP | MB1 | Furnace General Arrangement |
| EB06 - WORK OP | MB2 | Furnace Steel & Pipe Supports Dwgs. |
| EB06 - WORK OP | MB3 | Pressure Parts |
| EB06 - WORK OP | MB4 | Castings |
| EB06 - WORK OP | MB5 | Refractory-Mechanical Design |
| EB06 - WORK OP | MB6 | Furnace Equipment |
| EB06 - WORK OP | MB7 | Flares |
| EB06 - WORK OP | MB8 | Third Party Furnaces |
| EB06 - WORK OP | MB9 | API Data Sheets...Performance Summary |
| EB06 - WORK OP | MC2 | Standard Shell & Tube Exchangers |
| EB06 - WORK OP | MC3 | Company Proprietary Exchangers |
| EB06 - WORK OP | MC6 | Compact Heat Exchangers |
| EB06 - WORK OP | MD2 | Columns and Towers |
| EB06 - WORK OP | MD3 | Converts/Reactors/Regenerators |
| EB06 - WORK OP | MD4 | Drums |
| EB06 - WORK OP | MD5 | Special Vessels |
| EB06 - WORK OP | MF3 | Field Assembled Tanks |
| EB06 - WORK OP | MJ2 | Compressors |
| EB06 - WORK OP | MJ3 | Pumps |
| EB06 - WORK OP | MJ7 | Generators & Condensers |
| EB06 - WORK OP | ML3 | Packaged Equipment( See Machinery) |
| EB06 - WORK OP | ML4 | Filtering/Mixing/Drying Equipment |
| EB06 - WORK OP | ML5 | Misc Special Equipment |
| EB06 - WORK OP | ML9 | Other Special Equipment |
| EB06 - WORK OP | MU2 | Waste Water Treating |
| EB06 - WORK OP | MU3 | Water Treating Equipment |
| EB06 - WORK OP | MU4 | Boilers/Incinerators |
| EB06 - WORK OP | MU6 | Cooling Towers |
| EB06 - WORK OP | P00 | A/G Pipe |
| EB06 - WORK OP | P10 | Plot Plan |
| EB06 - WORK OP | P20 | A/G Plant Layout |
| EB06 - WORK OP | P30 | Mat'l. Specs |
| EB06 - WORK OP | P50 | A/G Isos |
| EB06 - WORK OP | P60 | Pipe Supports |
| EB06 - WORK OP | P80 | Tie-In List |
| EB06 - WORK OP | P90 | Special Piping Items |
| EB06 - WORK OP | R10 | Process Deliverables |
| EB06 - WORK OP | R20 | Process Equipment Data |
| EB06 - WORK OP | S10 | Steel Pipe Racks |
| EB06 - WORK OP | S20 | Steel Structures & Steel Bldgs |
| EB06 - WORK OP | S30 | Misc. Steel Supports & Platforms |
| EB06 - WORK OP | U20 | U/G Plant Layout |
| EB06 - WORK OP | U30 | U/G Electrical |
| EB06 - WORK OP | U40 | U/G Piping |
| EB06 - WORK OP | V00 | Coatings and Coverings |
| EB06 - WORK OP | V10 | Paint |
| EB06 - WORK OP | V20 | Insulation |
| EB06 - WORK OP | Y40 | Systems Equipment Data |
| EB06 - WORK OP | Y50 | System Instrument Data |
| EB06 - WORK OP | Y60 | Relief Systems |
| EB06 - WORK OP | Y70 | Utility Balances |
| EB06 - WORK OP | Y80 | Utility Flow Diagrams |
| EB06 - WORK OP | Y90 | Special Piping Items |
| EB06 - WORK OP | YP0 | P&IDs |
| EB06 - WORK OP | ZE0 | Electrical Area Classification |
| EB06 - WORK OP | ZF1 | Fire Protection Equipment Locations |
| EB07 - REQN | B1040 | STRUCTURAL STEEL |
| EB07 - REQN | E0001 | E0001 - Electrical Powerhouse |
| EB07 - REQN | E0002 | E0002 - Electrical Transformer |
| EB07 - REQN | E0004 | E0004 - Electrical UPS With Batteries |
| EB07 - REQN | E0008 | E0008 - 540-SB Substation Equipment |
| EB07 - REQN | E0009 | E0009 - Electrical Heat Tracing |
| EB07 - REQN | Found | Foundation Materials |
| EB07 - REQN | Gen | General |
| EB07 - REQN | I1310 | I1310 - Transmitters |
| EB07 - REQN | I1611 | I1611 - Pressure Gauges |
| EB07 - REQN | I1612 | I1612 - Differential Pressure Gauges |
| EB07 - REQN | I1616 | I1616 - Steam Drum Level Gauges |
| EB07 - REQN | I1617 | I1617 - Magnetic Level Gauges |
| EB07 - REQN | I1618 | I1618 - Temperature Gauges |
| EB07 - REQN | I1621 | I1621 - Temperature Elements |
| EB07 - REQN | I1623 | I1623 - Multi - Point Thermocouples |
| EB07 - REQN | I2110 | I2110 - Orifice Plates |
| EB07 - REQN | I2112 | I2112 - Ventruis |
| EB07 - REQN | I2115 | I2115 - Annubars |
| EB07 - REQN | I2116 | I2116- Wedge Flow Meters |
| EB07 - REQN | I2121 | I2121 - Vorterx Meters |
| EB07 - REQN | I2122 | I2122 - Coriolis Meters |
| EB07 - REQN | I2124 | I2124 - Rotometers |
| EB07 - REQN | I2127 | I2127 - Magnetic Flow Meters |
| EB07 - REQN | I2210 | I2210 - Control Valves |
| EB07 - REQN | I2211 | I2211 - Everest Severe Service Control Valves |
| EB07 - REQN | I2220 | I2220 - Motor Operated Valves |
| EB07 - REQN | I2230 | I2230 - On / Off Valves |
| EB07 - REQN | I3510 | I3510 DCS |
| EB07 - REQN | I3511 | I3510-02 DCS (MIV) |
| EB07 - REQN | I3520 | I3520 - SIS System |
| EB07 - REQN | I3542 | I3542 - ITCC System |
| EB07 - REQN | I4440 | I4440 - Shelters / Analyzers |
| EB07 - REQN | MB101 | Primary Reformer 101-B |
| EB07 - REQN | MB212 | MB212 101-B Siding |
| EB07 - REQN | MB221 | MB221 101-B Shop Fabrication & Pre-Assembly |
| EB07 - REQN | MB311 | MB311 101-B Radiant/Convection Pressure Materials |
| EB07 - REQN | MB312 | MB312 101-B Radiant Cast Materials |
| EB07 - REQN | MB333 | MB333 101-B Riser Transition Fabrication |
| EB07 - REQN | MB340 | MB340 101-B Finning |
| EB07 - REQN | MB410 | MB410 101-B Cast Tube Suppots |
| EB07 - REQN | MB420 | MB420 101-B Cast Peep Sights |
| EB07 - REQN | MB511 | MB511 101-B Shop Installed Insulation Components |
| EB07 - REQN | MB610 | MB610 101-B Burners |
| EB07 - REQN | MB621 | MB621 101-B I.D. & F.D. Fans |
| EB07 - REQN | MB622 | MB622 101-B Penthouse Circ. Fans |
| EB07 - REQN | MB630 | MB630 101- B Air Preheater |
| EB07 - REQN | MB640 | MB640 101-B Springs & Hangers |
| EB07 - REQN | MB660 | MB660 101-B Dampers & Air Doors |
| EB07 - REQN | MB691 | MB691 101-B Expansion Joints |
| EB07 - REQN | MB692 | MB692 101-B Cat Vacuum Equipment |
| EB07 - REQN | MB710 | MB710 - Storage Area Flare & Flame Font Generator |
| EB07 - REQN | MB810 | MB810 - Start-up Heater 102-B |
| EB07 - REQN | MC210 | MC210 - Carbon Steel S&T Exchangers |
| EB07 - REQN | MC230 | MC230 - Alloy S&T Exchangers |
| EB07 - REQN | MC310 | MC310 - KBR Exchangers Pkg#1 (101/2-C) |
| EB07 - REQN | MC311 | MC311 - KBR Exchangers Pkg#2 |
| EB07 - REQN | MC312 | MC312 - Exchangers 120-C & 121-C |
| EB07 - REQN | MC610 | MC610 - Double Pipe Exchangers |
| EB07 - REQN | MC630 | MC630 - CO2 Stripper Quench Cooler (107-C) |
| EB07 - REQN | MD201 | MD201- CO2 Absorber / Stripper (101/2-E) |
| EB07 - REQN | MD202 | MD202 - Ammonia Towers (103/4/5/50-E) |
| EB07 - REQN | MD301 | MD301 - Secondary Reformer (103-D) |
| EB07 - REQN | MD302 | MD302 - HT & LT Shift Converters (104-D1/D2) |
| EB07 - REQN | MD303 | MD303 - Ammonia Synthesis Converter (105-D) |
| EB07 - REQN | MD304 | MD304 - (106-D, 108-DA/DB, 109-DA/DB) |
| EB07 - REQN | MD305 | MD305 - Mercury Removal Bed |
| EB07 - REQN | MD401 | MD401 - Steam Drum (101-F) |
| EB07 - REQN | MD402 | MD402 - (102-F1/F2, 104-F, 144-F) |
| EB07 - REQN | MD403 | MD403 - Ammonia Separator (106-F) |
| EB07 - REQN | MD404 | MD404 - (107-F, 109-F, 132-F) |
| EB07 - REQN | MD405 | MD405 - (115-F, 118-F, 156-F, 157-F) |
| EB07 - REQN | MD406 | MD406 - CO2 Stripper Cond. KO Drum (103-F) |
| EB07 - REQN | MD411 | MD411 - (2006-F, 2203F, 2204-F, 2205-F) |
| EB07 - REQN | MD501 | MD501 - Primary Reformer Efflnt Tnsf Line 107-D |
| EB07 - REQN | MF301 | MF301 - Benefield Solution Storage Tank (114-F) |
| EB07 - REQN | MF302 | MF302 - (2001-FA/FB, 2002-F, 2401-F) |
| EB07 - REQN | MF311 | MF311 - Ammonia Storage Tanks (2101/2-F) |
| EB07 - REQN | MF312 | MF312 - Field Erected Tank |
| EB07 - REQN | MFSUB | FIELD ERECTED TANKS |
| EB07 - REQN | MJ201 | MJ201 - Process Air Compressor (101-J) |
| EB07 - REQN | MJ202 | MJ202 - Feed Gas,Syngas,Ammonia Refrig Cmprssr |
| EB07 - REQN | MJ301 | MJ301 - HP BFW Pump (104-J) |
| EB07 - REQN | MJ302 | MJ302 - Lean Solution Pumps (107-JA/B/C) |
| EB07 - REQN | MJ303 | MJ303 - CW Pumps (2202-JA/B/C) |
| EB07 - REQN | MJ304 | MJ304 - MP BFW Pumps (2003-J/JA) |
| EB07 - REQN | MJ305 | MJ305 - ISBL Small & Med Pumps |
| EB07 - REQN | MJ306 | MJ306 - OSBL Small & Med Pumps (Incl. 2007-J/JA) |
| EB07 - REQN | MJ307 | MJ307 - Ammonia Loading Pumps |
| EB07 - REQN | MJ308 | MJ308 - Waste Water Sump Pumps |
| EB07 - REQN | MJ340 | MJ340 - Metering Pumps (130-J/JA, 131-J/JA) |
| EB07 - REQN | MJ391 | MJ391 - Fire Water Pumps (2203-J, 2204-J-JA) |
| EB07 - REQN | MJ392 | MJ392 - Fire Water Pumps |
| EB07 - REQN | MJ730 | MJ730 - Emergency Power Generator (2303-J) |
| EB07 - REQN | MJ731 | MJ731 - Emergency Generator Package |
| EB07 - REQN | MJ750 | MJ750 - Surface Condensers (101-JTC, 103-JTC) |
| EB07 - REQN | ML313 | ML313 - Purge Gas Recovery Unit (160-L) |
| EB07 - REQN | ML330 | ML330 - Ammonia Refrigeration Package (2101-L) |
| EB07 - REQN | ML420 | ML420 - Cartridge Filters (104-L, 115-L) |
| EB07 - REQN | ML425 | ML425 - 101-J Air Filter (101-L) |
| EB07 - REQN | ML430 | ML430 - Benfield Solution Mixer (110-L) |
| EB07 - REQN | ML440 | ML440 - Coalescer (161-L) |
| EB07 - REQN | ML500 | ML500 - PAI/IA Compressor Package (2003-L) |
| EB07 - REQN | ML501 | ML501 - Storage Area Air Compressor Package |
| EB07 - REQN | ML512 | ML512 - Ammonia Loading Arm (2102-L) |
| EB07 - REQN | ML593 | ML593 - Flash Tank Ejectors |
| EB07 - REQN | ML900 | ML900 - Evaporation Pond Spray Nozzles |
| EB07 - REQN | MU221 | MU221 - Lift Stations (2402-L, 2403-L) |
| EB07 - REQN | MU222 | MU222 - Sanitary Treatment Package (2401-U) |
| EB07 - REQN | MU225 | MU225 - Lift Station |
| EB07 - REQN | MU292 | MU292 - Oil Skimmer (2404-L) |
| EB07 - REQN | MU300 | MU300 - Electro Dialysis Reversal Unit (2102-U) |
| EB07 - REQN | MU310 | MU310 - Chemical Injection Pkgs |
| EB07 - REQN | MU311 | MU311 - Bulk Chemical Storage Tanks |
| EB07 - REQN | MU322 | MU322 - Cooling Water Filter & Clarifier |
| EB07 - REQN | MU330 | MU330 - Water Treatment Unit (2001-U) |
| EB07 - REQN | MU340 | MU340 - Chlorination Units (2202-L, 2207-L) |
| EB07 - REQN | MU350 | MU350 - Deaerator (101-U) |
| EB07 - REQN | MU410 | MU410 - Package Boiler System (2002-U) |
| EB07 - REQN | MU611 | MU611 - Cooling Water Tower (2101-U) |
| EB07 - REQN | P1000 | EXCHANGERS |
| EB07 - REQN | P1080 | VESSELS |
| EB07 - REQN | P2020 | COMPRESSORS |
| EB07 - REQN | P2030 | PUMPS |
| EB07 - REQN | PIA11 | Bulk Purchase - A/G & U/G Piping |
| EB07 - REQN | PIA41 | Product Line Pre-insulated Piping |
| EB07 - REQN | PK000 | Summary Purchasing Activities |
| EB07 - REQN | PR201 | PR201 - KAAP Equipment Catalyst |
| EB07 - REQN | PS000 | Piping Specialty Items |
| EB07 - REQN | PSA08 | Pressure Relief Valves |
| EB07 - REQN | PTA02 | Pipe Supports |
| EB08 - TAG | 101B | Primary Reformer |
| EB08 - TAG | 101BA | Arch Burners |
| EB08 - TAG | 101BJ1 | Forced Draft Fan |
| EB08 - TAG | 101BL1 | Combustion Air Preheater |
| EB08 - TAG | 101C | Secondary Reformer Waste Heat Boiler |
| EB08 - TAG | 101E | CO2 Absorber |
| EB08 - TAG | 101F | Steam Drum |
| EB08 - TAG | 101J | Air Compressor |
| EB08 - TAG | 101JTC | Surface Condenser for 101/104-JT |
| EB08 - TAG | 101L | Air Filter for 101-J |
| EB08 - TAG | 101U | Deaerator |
| EB08 - TAG | 102B | Startup Heater |
| EB08 - TAG | 102E | CO2 Stripper |
| EB08 - TAG | 102F1 | Raw Gas Separator |
| EB08 - TAG | 102J | Feed Gas Compressor |
| EB08 - TAG | 103C1 | HTS Effluent BFW Preheater/Steam Generator |
| EB08 - TAG | 103D | Secondary Reformer |
| EB08 - TAG | 103E | LP Ammonia Scrubber |
| EB08 - TAG | 103F | CO2 Stripper Cond. KO Drum |
| EB08 - TAG | 103J | Synthesis Gas Compressor |
| EB08 - TAG | 103JTC | Surface Condenser for 103-JT |
| EB08 - TAG | 104D1 | High Temperature Shift Converter |
| EB08 - TAG | 104D2 | Low Temperature Shift Converter |
| EB08 - TAG | 104E | HP Ammonia Scrubber |
| EB08 - TAG | 104F | Syn Gas Comp. Suction Drum |
| EB08 - TAG | 104J | HP BFW Pump |
| EB08 - TAG | 104L | Benfield Solution Filter |
| EB08 - TAG | 105D | Ammonia Synthesis Converter |
| EB08 - TAG | 105J | Ammonia Refrigerant Compressor |
| EB08 - TAG | 106C | LTS Effluent/LPBFW Exchanger |
| EB08 - TAG | 106D | Methanator |
| EB08 - TAG | 106F | Ammonia Separator |
| EB08 - TAG | 107C | CO2 Stripper Quench Cooler |
| EB08 - TAG | 107D | Primary Reformer Effluent Transfer Line |
| EB08 - TAG | 107F | Ammonia Letdown Drum |
| EB08 - TAG | 107JA | Lean Solution Pump |
| EB08 - TAG | 108DA | Desulfurizer |
| EB08 - TAG | 109F | Refrigerant Receiver |
| EB08 - TAG | 109L | Benfield Anitfoam Injection System |
| EB08 - TAG | 110C | Lean Solution Cooler |
| EB08 - TAG | 110L | Benfield Solution Mixer |
| EB08 - TAG | 111C | CO2 Stripper Ejector Steam Generator |
| EB08 - TAG | 111J | Benfield Transfer Pump |
| EB08 - TAG | 112J | Condensate Pump for 103-JTC |
| EB08 - TAG | 113J | Condensate Pump for 101-JTC |
| EB08 - TAG | 114C | Methanator Feed/Effluent Exchanger |
| EB08 - TAG | 114F | Benefield Solution Storage Tank |
| EB08 - TAG | 115F | Benfield Solution Sump |
| EB08 - TAG | 115L | Benfield Sump Filter |
| EB08 - TAG | 116J | CO2 Stripper Reflux Pump |
| EB08 - TAG | 118F | Benfield Carbon Filter |
| EB08 - TAG | 120C | Ammonia Unitized Chiller |
| EB08 - TAG | 120J | Ammonia Reflux Pump |
| EB08 - TAG | 121C | Ammonia Conv. Feed/Effluent Exchanger |
| EB08 - TAG | 123C1 | Ammonia Conv. Effluent/Preheater Exchanger |
| EB08 - TAG | 124C | Ammonia Conv. Effluent Cooler |
| EB08 - TAG | 127C | Refrigerant Condenser |
| EB08 - TAG | 130C | Syn Gas Compressor Suction Chiller |
| EB08 - TAG | 130J | Ammonia Distillation Column Feed Pump |
| EB08 - TAG | 132F | Lean Solution Flash Tank |
| EB08 - TAG | 133C | Feed Gas Comp. Kickback Cooler |
| EB08 - TAG | 144F | Feed Gas Knockout Drum |
| EB08 - TAG | 150E | Process Condensate Stripper |
| EB08 - TAG | 156F | Steam Blowdown Drum |
| EB08 - TAG | 157F | Mol Sieve Regen HP Condensate Drum |
| EB08 - TAG | 160C | Ammonia Distillation Column Reboiler |
| EB08 - TAG | 160L | Purge Gas Recovery Unit |
| EB08 - TAG | 161C | Aqua Ammonia Interchanger |
| EB08 - TAG | 167C | Refrig. Comp. Second Stage Intercooler |
| EB08 - TAG | 173C | Start-up Cooler |
| EB08 - TAG | 174C | Stripped Condensate Cooler |
| EB08 - TAG | 183C | Mol Sieve Regeneration Heater |
| EB08 - TAG | 188CA | Condensate Stripper Feed/Effluent Exchanger |
| EB08 - TAG | 2001FA | Fresh/Firewater/Potable/Service Storage Tank |
| EB08 - TAG | 2001FB | Fresh/Firewater/Potable/Service Storage Tank |
| EB08 - TAG | 2001U | Water Treatment Unit |
| EB08 - TAG | 2002F | Demineralizer Water Tank |
| EB08 - TAG | 2002J | Demin. Water Make-Up Pump |
| EB08 - TAG | 2002U | Package Boiler System |
| EB08 - TAG | 2003J | Medium Pressure BFW Pump |
| EB08 - TAG | 2003L | PAI/IA Compressor Package |
| EB08 - TAG | 2006F | Boiler Blowdown Drum |
| EB08 - TAG | 2007J | Cooling Water Make-Up Pump |
| EB08 - TAG | 2100JA | Ammonia Loading Pumps |
| EB08 - TAG | 2101F | Ammonia Storage Tanks |
| EB08 - TAG | 2101L | Ammonia Refrigeration Package |
| EB08 - TAG | 2101U | Cooling Water Tower |
| EB08 - TAG | 2102F | Ammonia Storage Tanks |
| EB08 - TAG | 2102L | Ammonia Loading Arm |
| EB08 - TAG | 2102U | Electro Dialysis Reversal Unit |
| EB08 - TAG | 2105F | Water Tank |
| EB08 - TAG | 2202B | Ammonia Storage Flare |
| EB08 - TAG | 2202JA | Freshwater Cooling Water Pump |
| EB08 - TAG | 2203F | Caustic Storage Tank |
| EB08 - TAG | 2204J | Firewater Pump |
| EB08 - TAG | 2303J | Emergency Power Generator |
| EB08 - TAG | 2401F | Wastewater Neutralization Tank |
| EB08 - TAG | 2401J | Neutralization Tank Pump |
| EB08 - TAG | 2401U | Sanitary Treatment Package |
| EB08 - TAG | 2402L | Sanitary Lift Station, Control Bldg |
| EB08 - TAG | 2404L | Oil Skimmer |
| EB08 - TAG | 2601K | Control Building |
| EB08 - TAG | 2603K | Administration Bldg |
| EB08 - TAG | 2604K | Warehoue & Main. Bldg |
| EB08 - TAG | 2610K | Electrical Powerhouse |
| EB08 - TAG | X | Vendor Data |
| EB09 - IPMS | A | ERW Issued |
| EB09 - IPMS | B | Issue Req / RFQ |
| EB09 - IPMS | C | Receive Bids |
| EB09 - IPMS | D | Technical Evaluation |
| EB09 - IPMS | E | Eval Bids & Issue Recomendation |
| EB09 - IPMS | F | Purchase Order Requisition |
| EB09 - IPMS | G | Interim Award |
| EB09 - IPMS | H | Fab / Exworks |
| EB09 - IPMS | J | Receive Initial Supplier Data |
| EB09 - IPMS | K | Issue Formal Award |
| EB09 - IPMS | L | Receive at Site |
| EB09 - IPMS | M | Production Data |
| EB09 - IPMS | N | Shipping / Transit |
| EB10 - KEY | C2 | Conceptual Model Steel |
| EB10 - KEY | C3 | Conceptual Model Foundations |
| EB10 - KEY | C4 | Detail Model & IFC Dwgs - Steel |
| EB10 - KEY | C5 | Detail Model & IFC Dwgs - Foundations |
| EB10 - KEY | CE | Critical Equipment Inquiry |
| EB10 - KEY | E1 | Electrical Drawings - IFC |
| EB10 - KEY | ER | Electrical Equipment Requistions |
| EB10 - KEY | FE | Final Equiment Inquiry |
| EB10 - KEY | HL | Heavy Lift Activities |
| EB10 - KEY | I1 | Instrumentation Drawings - IFC |
| EB10 - KEY | IR | Tagged Instrument Requisitions |
| EB10 - KEY | NE | Non-Critical Equipment Inquiry |
| EB10 - KEY | P00 | Preliminary Drawings for Supersketch |
| EB10 - KEY | P01 | Supersketches |
| EB10 - KEY | P02 | Plant Layout Model |
| EB10 - KEY | P03 | Model Review Mtg |
| EB10 - KEY | P04 | Model Review Comment Resolution |
| EB10 - KEY | P05 | IDP - Plant Layout |
| EB10 - KEY | P06 | Model Comment Resolution Approval |
| EB10 - KEY | P07 | Planning Release |
| EB10 - KEY | P08 | Detail Model Development |
| EB10 - KEY | P09 | Detail OP's & Services Model Review |
| EB10 - KEY | P10 | OP's & Serv. Model Review Comment Resolution |
| EB10 - KEY | P11 | IDP - Detail Design |
| EB10 - KEY | P12 | OP's & Serv. Model Comment Resolution Approval |
| EB10 - KEY | P13 | Issue Isos IFC |
| EB10 - KEY | P14 | Pipe Supports |
| EB10 - KEY | P15 | Planning Vendor Data |
| EB10 - KEY | P16 | Production Vendor Data |
| EB10 - KEY | P17 | Plot Plans |
| EB10 - KEY | P18 | Equipment Location Plans |
| EB10 - KEY | P19 | Nozzle Releases |
| EB10 - KEY | P20 | Misc. |
| EB10 - KEY | PE | Preliminary Equipment Inquiry |
| EB10 - KEY | PM | Payment Milestones |
| EB10 - KEY | T | Field Fabricated Tanks |
| EB10 - KEY | T1 | Field Fabricated Tanks (Associated Activities) |
| EB10 - KEY | UE | U/G Electrical Materal Releases |
| EB10 - KEY | Y0 | P&IDs Issue - IDR |
| EB10 - KEY | Y1 | P&IDs Issue - ICA |
| EB10 - KEY | Y2 | P&IDs Issue - IPL |
| EB10 - KEY | Y3 | P&IDs Issue - IFD |
| EB10 - KEY | Y4 | P&IDs Issue - IFC |
| EB11 - FLAG | CD | Risk Ranging - Remaining Dur. Chg. Due to Ranging |
| EB11 - FLAG | HD | Heavy Lift (X-Works & Transport) |
| EB11 - FLAG | N | Risk Ranging - New Item |
| EB11 - FLAG | PS | Project Status Review Activity |
| EB11 - FLAG | VD | Vendor Data Constrained |
| EB11 - FLAG | WC | WBS Activity for Construction Manhours |
| EB11 - FLAG | WE | Engineering Workhour / Qty Loading |
| EB11 - FLAG | X | 90 DAY ACTIVITIES ADDED3/2/05 |
| EB11 - FLAG | Y | Changed Flag |
| EB11 - FLAG | Z | Payment Milestone |
| EB12 - TEMP | 2Y | 02Y Pipe Rack Critical Activities |
| EB12 - TEMP | L1 | Sort 1 |
| EB12 - TEMP | L2 | Sort 2 |
| EB12 - TEMP | L3 | Sort 3 |
| EB12 - TEMP | L4 | Sort 4 |
| EB12 - TEMP | L5 | Sort 5 |
| EB12 - TEMP | S1 | Ammonia Storage (KBR) |
| EB12 - TEMP | S2 | Ammonia Storage (EBIC) |
| EB12 - TEMP | X | Check Activity |
| EB12 - TEMP | Y | Project Review Schedule |
| EB14 - RISK | 01 | Bulk Pipe Material Deliveries |
| EB14 - RISK | 02 | Control Building & DSC, SIS, ITCC |
| EB14 - RISK | 03 | Ammonia Tank piling |
| EB14 - RISK | 04 | Primary Reformer 101-B |
| EB14 - RISK | 05 | Package Boiler 2002-U |
| EB14 - RISK | 06 | Compressor Deliveries 101/2/3/5-J |
| EB14 - RISK | 07 | Notice to Proceed slippage |
| EB14 - RISK | 09 | EDR Unit Capabilities |
| EB14 - RISK | 10 | Class J Vendor Data |
| EB14 - RISK | 11 | EXIM Shipping - US Flag ships |
| EB14 - RISK | 12 | CO2 Stripper 102-E |
| EB14 - RISK | 13 | Equipment Fabrication Lead Times |
| EB14 - RISK | 14 | Ammonia Tank Subcontract |
| EB14 - RISK | 15 | Special Equipment (Vs FMCL) |
| EB14 - RISK | 16 | OCI Bulk Procurement/Fabrication |
| EB14 - RISK | 17 | MEC IFC Deliverable Schedule |
| EB14 - RISK | 20 | Performance Test Schedule |
| EB14 - RISK | 21 | Pipe Installation Durations |
| EB14 - RISK | 22 | Jetty Basin 3 vs Basin 1 |
| EB14 - RISK | 23 | Area 02M Hydro testing |
| EB15 - Civil / U/G Path of Construction | 1 | Civil / Stuct Path of Construction |
| EB15 - Civil / U/G Path of Construction | 10 | Civil / Stuct Path of Construction |
| EB15 - Civil / U/G Path of Construction | 11 | Civil / Stuct Path of Construction |
| EB15 - Civil / U/G Path of Construction | 12 | Civil / Stuct Path of Construction |
| EB15 - Civil / U/G Path of Construction | 13 | Civil / Stuct Path of Construction |
| EB15 - Civil / U/G Path of Construction | 14 | Civil / Stuct Path of Construction |
| EB15 - Civil / U/G Path of Construction | 15 | Civil / Stuct Path of Construction |
| EB15 - Civil / U/G Path of Construction | 16 | Civil / Stuct Path of Construction |
| EB15 - Civil / U/G Path of Construction | 17 | Civil / Stuct Path of Construction |
| EB15 - Civil / U/G Path of Construction | 18 | Civil / Stuct Path of Construction |
| EB15 - Civil / U/G Path of Construction | 19 | Civil / Stuct Path of Construction |
| EB15 - Civil / U/G Path of Construction | 2 | Civil / Stuct Path of Construction |
| EB15 - Civil / U/G Path of Construction | 20 | Civil / Stuct Path of Construction |
| EB15 - Civil / U/G Path of Construction | 21 | Civil / Stuct Path of Construction |
| EB15 - Civil / U/G Path of Construction | 22 | Civil / Stuct Path of Construction |
| EB15 - Civil / U/G Path of Construction | 23 | Civil / Stuct Path of Construction |
| EB15 - Civil / U/G Path of Construction | 24 | Civil / Stuct Path of Construction |
| EB15 - Civil / U/G Path of Construction | 25 | Civil / Stuct Path of Construction |
| EB15 - Civil / U/G Path of Construction | 26 | Civil / Stuct Path of Construction |
| EB15 - Civil / U/G Path of Construction | 27 | Civil / Stuct Path of Construction |
| EB15 - Civil / U/G Path of Construction | 28 | Civil / Stuct Path of Construction |
| EB15 - Civil / U/G Path of Construction | 29 | Civil / Stuct Path of Construction |
| EB15 - Civil / U/G Path of Construction | 3 | Civil / Stuct Path of Construction |
| EB15 - Civil / U/G Path of Construction | 30 | Civil / Stuct Path of Construction |
| EB15 - Civil / U/G Path of Construction | 31 | Civil / Stuct Path of Construction |
| EB15 - Civil / U/G Path of Construction | 32 | Civil / Stuct Path of Construction |
| EB15 - Civil / U/G Path of Construction | 33 | Civil / Stuct Path of Construction |
| EB15 - Civil / U/G Path of Construction | 34 | Civil / Stuct Path of Construction |
| EB15 - Civil / U/G Path of Construction | 35 | Civil / Stuct Path of Construction |
| EB15 - Civil / U/G Path of Construction | 36 | Civil / Stuct Path of Construction |
| EB15 - Civil / U/G Path of Construction | 37 | Civil / Stuct Path of Construction |
| EB15 - Civil / U/G Path of Construction | 38 | Civil / Stuct Path of Construction |
| EB15 - Civil / U/G Path of Construction | 39 | Civil / Stuct Path of Construction |
| EB15 - Civil / U/G Path of Construction | 4 | Civil / Stuct Path of Construction |
| EB15 - Civil / U/G Path of Construction | 40 | Civil / Stuct Path of Construction |
| EB15 - Civil / U/G Path of Construction | 41 | Civil / Stuct Path of Construction |
| EB15 - Civil / U/G Path of Construction | 5 | Civil / Stuct Path of Construction |
| EB15 - Civil / U/G Path of Construction | 6 | Civil / Stuct Path of Construction |
| EB15 - Civil / U/G Path of Construction | 7 | Civil / Stuct Path of Construction |
| EB15 - Civil / U/G Path of Construction | 8 | Civil / Stuct Path of Construction |
| EB15 - Civil / U/G Path of Construction | 9 | Civil / Stuct Path of Construction |
| EB16 - Piping Path of Construction | 1 | Piping Path of Construction |
| EB16 - Piping Path of Construction | 10 | Piping Path of Construction |
| EB16 - Piping Path of Construction | 11 | Piping Path of Construction |
| EB16 - Piping Path of Construction | 12 | Piping Path of Construction |
| EB16 - Piping Path of Construction | 13 | Piping Path of Construction |
| EB16 - Piping Path of Construction | 14 | Piping Path of Construction |
| EB16 - Piping Path of Construction | 15 | Piping Path of Construction |
| EB16 - Piping Path of Construction | 16 | Piping Path of Construction |
| EB16 - Piping Path of Construction | 17 | Piping Path of Construction |
| EB16 - Piping Path of Construction | 18 | Piping Path of Construction |
| EB16 - Piping Path of Construction | 19 | Piping Path of Construction |
| EB16 - Piping Path of Construction | 2 | Piping Path of Construction |
| EB16 - Piping Path of Construction | 20 | Piping Path of Construction |
| EB16 - Piping Path of Construction | 21 | Piping Path of Construction |
| EB16 - Piping Path of Construction | 22 | Piping Path of Construction |
| EB16 - Piping Path of Construction | 23 | Piping Path of Construction |
| EB16 - Piping Path of Construction | 24 | Piping Path of Construction |
| EB16 - Piping Path of Construction | 25 | Piping Path of Construction |
| EB16 - Piping Path of Construction | 26 | Piping Path of Construction |
| EB16 - Piping Path of Construction | 27 | Piping Path of Construction |
| EB16 - Piping Path of Construction | 28 | Piping Path of Construction |
| EB16 - Piping Path of Construction | 29 | Piping Path of Construction |
| EB16 - Piping Path of Construction | 3 | Piping Path of Construction |
| EB16 - Piping Path of Construction | 30 | Piping Path of Construction |
| EB16 - Piping Path of Construction | 31 | Piping Path of Construction |
| EB16 - Piping Path of Construction | 32 | Piping Path of Construction |
| EB16 - Piping Path of Construction | 33 | Piping Path of Construction |
| EB16 - Piping Path of Construction | 34 | Piping Path of Construction |
| EB16 - Piping Path of Construction | 35 | Piping Path of Construction |
| EB16 - Piping Path of Construction | 36 | Piping Path of Construction |
| EB16 - Piping Path of Construction | 37 | Piping Path of Construction |
| EB16 - Piping Path of Construction | 38 | Piping Path of Construction |
| EB16 - Piping Path of Construction | 39 | Piping Path of Construction |
| EB16 - Piping Path of Construction | 4 | Piping Path of Construction |
| EB16 - Piping Path of Construction | 40 | Piping Path of Construction |
| EB16 - Piping Path of Construction | 41 | Piping Path of Construction |
| EB16 - Piping Path of Construction | 5 | Piping Path of Construction |
| EB16 - Piping Path of Construction | 6 | Piping Path of Construction |
| EB16 - Piping Path of Construction | 7 | Piping Path of Construction |
| EB16 - Piping Path of Construction | 8 | Piping Path of Construction |
| EB16 - Piping Path of Construction | 9 | Piping Path of Construction |
| EB17 - Suffix | E1B1 | Ammonia - HOC |
| EB17 - Suffix | E2B2 | Utilities, O/S, Doc, Corridor - HOC |
| EB17 - Suffix | E3B3 | Construction |
| EB17 - Suffix | E4B4 | Ammonia - MOC |
| EB17 - Suffix | E5B5 | Utilities, O/S, Doc, Corridor - MOC |
| EB18 - Grouping | A Copy | Almost Copy Areas - 02M, 02N, 02P, 02Q |
| EB18 - Grouping | Copy | Copy Areas - 02A, 02B, 02E, 02H, 02J, 02K |
| EB18 - Grouping | NEW | New Areas - 02C, 02D, 02F, 02G, 02L, 02Y |
| EB19 - System | 01U | Common - Offsites Underground |
| EB19 - System | 02U | Common - Ammonia Underground |
| EB19 - System | 03U | Common - Utility Plant Underground |
| EB19 - System | 04U | Common - Corridor Underground |
| EB19 - System | 05U | Common - Dock/Storage Underground |
| EB19 - System | AS | Acid Sewer (AS) |
| EB19 - System | CB | Benfield Sewer (CB) |
| EB19 - System | CS | Caustic Sewer (CS) |
| EB19 - System | CW | Cooling Water (CW) |
| EB19 - System | FW | Firewater (FW) |
| EB19 - System | OH | Hot Outfall Sewer (OH) |
| EB19 - System | OS | Outfall Sewer (OS) |
| EB19 - System | OW | Oily Water Sewer (OW) |
| EB19 - System | PA | Plant Air (PA) |
| EB19 - System | PS | Process Water Sewer (PS) |
| EB19 - System | PW | Potable Water (PW) |
| EB19 - System | SS | Sanitary Sewer (SS) |
| EB19 - System | WW | Waste Water (WW) |
| EB21 - Rev 2 Risk Associations | 02 | Bulk Materials - Early Purchase of Correct Qty's Meeting Schedule |
| EB21 - Rev 2 Risk Associations | 03 | Late Buys - Cost & Expedited Deliveries |
| EB21 - Rev 2 Risk Associations | 05A | Working with SPDC - Getting Information |
| EB21 - Rev 2 Risk Associations | 06 | Receipt of Vendor Data & Timely Reviews by Engineering |
| EB22 - Critical Actvities | C1 | Critical Activities - 0 Days Float or Less |
| EB22 - Critical Actvities | C2 | Critical Activities - > 0 Days & < 5 Days Float |
| EB22 - Critical Actvities | C3 | Critical Activities - > 5 Days & < 20 Days Float |
| EB22 - Critical Actvities | C4 | Critical Activities - > 20 Days & < 30 Days Float |
| EB22 - Critical Actvities | C5 | Critical Activities - >30 Days & < 40 Days Float |
| Ship From | GER | Germany |
| Ship From | HOU | Houston |
| Ship From | IND | India |
| Ship From | ITA | Italy |
| Ship From | JAP | Japan |
| Ship From | NY | New York |
| Ship From | SEAT | Seattle |
| Ship From | U/E | USA / Euro |
| Ship From | U/G | UK / Germany |
| Vendor | A | Alco |
| Vendor | AC | ACFM |
| Vendor | B | Brazos |
| Vendor | BD | BD Heat |
| Vendor | BR | BranLubbe |
| Vendor | C | Casco |
| Vendor | CA | Callidus |
| Vendor | CL | Clarage |
| Vendor | CO | Costain |
| Vendor | D | Danmar |
| Vendor | DA | Datum |
| Vendor | E | Ecodyne |
| Vendor | EG | Egglehof |
| Vendor | EL | Eldridge |
| Vendor | F | Flowserve |
| Vendor | FM | FMC |
| Vendor | G | Graham |
| Vendor | GB | G.E.Betz |
| Vendor | GE | G.E.Ionics |
| Vendor | GO | Goulds |
| Vendor | K | Kruger |
| Vendor | MA | Mabry |
| Vendor | MAR | Marley |
| Vendor | OS | Oil Skimmer |
| Vendor | P | P2S |
| Vendor | PI | Piping Tech |
| Vendor | R | Rentech |
| Vendor | S | Siemens |
| Vendor | SD | S & D |
| Vendor | SH | Sharpe Mixer |
| Vendor | SN | Snow Mach |
| Vendor | SO | So.Plains |
| Vendor | ST | S & T |
| Vendor | SU | Sulzer |
| Vendor | T | Tulsa Htr. |
| Vendor | TH | Thorpe |
| Vendor | TO | Toromont |
| Vendor | U | U.S.Filter |
| Vendor | WA | Walhco |
