# 4229-420, Hilal development project

Schedule from Primavera P6, 2011-08-15 to 2013-09-26, data date 2012-06-02, A marks actual dates.

## Calendars

- ENGINEERING: Mon-Thu 08:00-16:00; Fri-Sat off; Sun 08:00-16:00. Exceptions (off unless hours are given): 2011-08-30 to 2011-08-31, 2011-10-06, 2011-11-06 to 2011-11-10, 2012-01-25, 2012-08-19 to 2012-08-23, 2012-10-21 to 2012-10-25.
- SUPPLIER: Mon-Sun 08:00-16:00. Exceptions (off unless hours are given): 2011-12-25 to 2011-12-29, 2012-01-01 to 2012-01-07, 2012-01-25, 2012-08-20 to 2012-08-31.
- calendar: Mon-Sun 08:00-16:00. Exceptions (off unless hours are given): 2012-12-31 00:00-00:00.
- 6 DAY WORK PER WEEK: Mon-Thu 08:00-16:00; Fri off; Sat-Sun 08:00-16:00. Exceptions (off unless hours are given): 2011-08-17 07:30-16:00, 2011-10-06, 2011-11-05 to 2011-11-09, 2012-01-07, 2012-02-04, 2012-04-16, 2012-04-25, 2012-05-01, 2012-07-23, 2012-08-18 to 2012-08-20, 2012-10-06, 2012-10-25, 2012-10-27 to 2012-10-28, 2012-11-15, 2013-01-07, 2013-01-24, 2013-02-04, 2013-04-16, 2013-04-25, 2013-05-01, 2013-07-23, 2013-08-07 to 2013-08-08.
- 7 - 7 Days Working Week: Mon-Sun 08:00-12:00, 13:00-17:00.

## Schedule

| ID | Activity | Type | Duration | Start | Finish | Predecessors | Total float | Free float | Constraint | Resp |
| --- | --- | --- | --- | --- | --- | --- | --- | --- | --- | --- |
| PMS100 | Compile Sealines and transportation bid package |  | 14d | 2012-06-03 | 2012-06-20 |  | 57d | 0d |  |  |
| OFF02 | Compile Platfrom installation ITB |  | 5d | 2012-06-13 | 2012-06-19 |  | 0d |  | start on 2012-06-13 |  |
| OFF04 | Bid platfrom installation package |  | 60d | 2012-06-20 | 2012-09-18 | OFF02 | 0d |  |  |  |
| PM01 | Compile transportation and sealines package |  | 15d | 2012-06-20 | 2012-07-10 |  | 0d |  | start on 2012-06-20 |  |
| PMS105 | Negotiation/award sealines and transporation package |  | 90d | 2012-06-21 | 2012-11-07 | PMS100 | 57d | 0d |  |  |
| PM04 | Negotiate Sealines and transportation package |  | 65d | 2012-07-11 | 2012-10-16 | PM01 | 55d | 0d |  |  |
| OFF06 | TE platfrom installation package |  | 21d | 2012-09-19 | 2012-10-17 | OFF04 | 0d |  |  |  |
| PM06 | Award transportation and sealines package |  | 10d | 2012-10-17 | 2012-11-06 | PM04 | 55d | 0d |  |  |
| OFF10 | CE and negotiation platfrom installation package |  | 50d | 2012-10-18 | 2013-01-02 | OFF06 | 0d |  |  |  |
| PM16 | Mobilizae transportation and sealines contractor |  | 14d | 2012-11-07 | 2012-11-26 | PM06 | 55d | 0d |  |  |
| PMS110 | Mobilization of Sealines and transportation Contractor |  | 21d | 2012-11-08 | 2012-12-06 | PMS105 | 57d | 0d |  |  |
| PMS02 | Transport Jacket and piles |  | 14d | 2012-11-27 | 2012-12-16 | PM16 | 55d |  |  | PTJ |
| PMS03 | Transport sealine spools to site |  | 14d | 2012-11-27 | 2012-12-16 | PM16 | 57d | 55d |  | PTJ |
| PMS01 | Transport deck/topsides to site |  | 14d | 2012-12-09 | 2012-12-26 | PMS110 | 57d |  |  | PTJ |
| OFF20 | Award offshore installation package |  | 7d | 2013-01-03 | 2013-01-13 | OFF10 | 0d |  |  |  |
| OFF30 | Mobilize platform installation contractor |  | 30d | 2013-01-14 | 2013-02-24 | OFF20 | 0d |  |  |  |
| PMS00 | Preinstallation survey |  | 5d | 2013-02-25 | 2013-03-03 | GM04 (other project), OFF30, PM16 | 0d |  |  | PTJ |
| PMS04 | Install jacket |  | 2d | 2013-03-04 | 2013-03-05 | PMS02, PMS00 | 0d |  |  | PTJ |
| PMS09 | Install sealines |  | 10d | 2013-03-04 | 2013-03-17 | PMS00, PMS03 | 2d |  |  | PTJ |
| PMS05 | Drive piles |  | 8d | 2013-03-06 | 2013-03-17 | PMS04 | 0d |  |  | PTJ |
| PMS06 | Install deck/topside module |  | 2d | 2013-03-18 | 2013-03-19 | PMS01, PMS05 | 0d |  |  | PTJ |
| PMS10 | Tie-in risers and sealines |  | 4d | 2013-03-20 | 2013-03-25 | PMS09, PMS06 | 0d |  |  | PTJ |
| PMS20 | Post-installation survey |  | 7d | 2013-03-26 | 2013-04-03 | PMS10 | 0d |  |  | PTJ |
| PMS90 | Release platform and transfer custody to Drilling |  | 1d | 2013-04-04 | 2013-04-04 | PMS20 | 0d |  |  | PTJ |
| DRIL00 | Mobilize Drilling Rig |  | 5d | 2013-04-07 | 2013-04-11 | PMS90 SS+1d | 0d |  |  |  |
| DRIL01 | Drill well no. 1 |  | 55d | 2013-04-14 | 2013-06-27 | DRIL00 | 0d |  |  | PTJ |
| DRIL10 | Complete Well no. 1 |  | 45d | 2013-06-30 | 2013-08-29 | DRIL01 | 0d |  |  | PTJ |
| PMS91 | Mechanical complete and hookup well no. 1 |  | 10d | 2013-09-01 | 2013-09-12 | DRIL10 | 0d |  |  | PTJ |
| PMS96 | Final precommissioning and commissioning |  | 10d | 2013-09-15 | 2013-09-26 | PMS91 | 0d |  |  | PTJ |
| GUP01 | Startup and first oil | milestone | 0d | 2013-09-26 | 2013-09-26 | PMS96 | 0d |  |  | PTJ |

| ID | WBS | Activity | Type | Duration | Start | Finish | Predecessors | Complete | Total float | Free float | Constraint | Calendar | Work Package | Resp. | Phase-1 | Phase-2 | Resp |
| --- | --- | --- | --- | --- | --- | --- | --- | --- | --- | --- | --- | --- | --- | --- | --- | --- | --- |
|  | 1 | **General Milestones** |  |  | 2011-08-15 | 2013-04-07 |  |  |  |  |  |  |  |  |  |  |  |
| 4229GM10 |  | Project Coming into force / Kick-off meeting | milestone | 0d | 2011-08-15 A | 2011-08-15 A |  | 100% |  |  |  |  | 0 | ENP | 1 |  |  |
| 4229GM140 |  | Change order 1 approval | milestone | 0d | 2011-10-16 A | 2011-10-16 A | 4229GM10 FS+42d | 100% |  |  |  |  | 0 | ENP | 1 |  |  |
| 4229GM110 |  | Material delivered at site- except Choke valve (offshore installation) | milestone | 0d | 2013-01-16 | 2013-01-16 | 4229PSV100, 4229PPB100, 4229PIB100, 4229PFI100, 4229PSG100, 4229PRS100, 4229PMP100 FF, 4229PSU100, 4229PNA100, 4229PEB100, 4229PIB1090, 4229PRV100, 4229PVE100, 4229PTA100, 4229POV100 |  | 253d | 54d |  | calendar | 3 | ENP | 1 |  |  |
| 4229GM100 |  | Engineering completion | milestone | 0d | 2013-02-12 | 2013-02-12 | 4229GM80, 4229ELP500, 4229ELP70, 4229ELP80, 4229ELP230, 4229ELP260, 4229ELP390, 4229ELP40, 4229ELP480, 4229ELP90, 4229ELP410, 4229ELP100, 4229ELP120, 4229ELP180, 4229ELP340, 4229ELP240, 4229ELP270, 4229ELP170, 4229ELP570, 4229EPR90, 4229EPR120, 4229EPR190, 4229EPI80, 4229EPI160, 4229EPI230, 4229EPI250, 4229EPI50, 4229EPI30, A1010, 4229EME70, 4229EME10, 4229EOF260, 4229EOF560, 4229EOF440, 4229EOF80, 4229EOF480, 4229EEL120, 4229EEL30, 4229EIN100, 4229EIN410, 4229EIN430, 4229EIN270, 4229EIN250, 4229EIN210, 4229EPL420, 4229EPL450, 4229EPL490, 4229EPL20, 4229EPL140, 4229EPL150, 4229ETE20, 4229ETE10, 4229GM90, 4229ELP450, 4229ELP490, 4229ELP190, 4229ELP290, 4229EPR110, 4229EPR170, 4229EPR20, 4229EPR80, 4229EPI170, 4229EPI110, 4229EPI70, 4229EPI200, 4229EOF520, 4229EOF150, 4229EOF40, 4229EOF320, 4229EOF380, 4229EOF250, 4229EEL270, 4229EEL110, 4229EEL160, 4229EEL240, 4229EEL150, 4229EEL140, 4229EIN470, 4229EIN530, 4229EIN310, 4229EPR300, 4229EIN180, 4229EIN40, 4229EIN320, 4229EPL170, 4229EPL350, 4229EPL440, 4229EPL480, 4229EPL340, 4229EPL250, 4229EPL10, 4229ELP520, 4229ELP220, 4229ELP380, 4229ELP370, 4229ELP130, 4229ELP210, 4229EPR100, 4229EPR140, 4229EPI130, 4229EPI150, 4229EME140, 4229EOF200, 4229EOF170, 4229EOF570, 4229EOF450, 4229EOF90, 4229EOF370, 4229EOF180, 4229EEL190, 4229EEL170, 4229EEL200, 4229EEL210, 4229EEL10, 4229EIN130, 4229EIN560, 4229EIN160, 4229EPL430, 4229EPL160, 4229EPL220, 4229EPL60, 4229EPL70, 4229EPL210, 4229EPV30, 4229GM40, 4229ELP200, 4229ELP50, 4229ELP590, 4229ELP400 FF, 4229EPR10, 4229EPR180, 4229EPI120, 4229EPI180, A1000, 4229EME20, 4229EME40, 4229EME130, 4229EME100, 4229EOF590, 4229EOF10, 4229EOF390, 4229EOF490, 4229EOF510, 4229EOF460, 4229EEL90, 4229EEL180, 4229EEL50, 4229EEL20, 4229EEL300, 4229EEL40, 4229EEL130, 4229EIN60, 4229EIN70, 4229EIN440, 4229EIN460, 4229EIN360, 4229EIN340, 4229EIN170, 4229EIN220, 4229EPL390, 4229EPL330, 4229EPL460, 4229EPL470, 4229EPL190, 4229EPL90, 4229EPL100, 4229EPL130, 4229EPV50, 4229EPV60, 4229ETE30, 4229ETE150, 4229GM10, 4229ELP530, 4229ELP140, 4229ELP250, 4229ELP160, 4229ELP350, 4229ELP600, 4229ELP60, 4229EPR50, 4229EPR150, 4229EPI40, 4229EPI100, 4229EPI220, 4229EPI260, 4229EPI10, 4229EPI140, 4229EME160, 4229EOF310, 4229EOF130, 4229EOF420, 4229EOF30, 4229EOF500, 4229EOF530, 4229EOF470, 4229EOF190, 4229EOF430, 4229EIN450, 4229EIN520, 4229EIN300, 4229EIN590, 4229EIN550, 4229EIN230, 4229EIN110, 4229EIN20, 4229EPL290, 4229EPL410, 4229EPL280, 4229EPL80, 4229EPV20, 4229GM130, 4229GM60, 4229ELP460, 4229ELP470, 4229ELP10, 4229ELP280, 4229ELP560, 4229EPR220, 4229EPR210, 4229EPR230, 4229EPR160, 4229EPR130, 4229EPR40, 4229EPI60, A1020, 4229EPI90, 4229EME50, 4229EME150, 4229EOF580, 4229EOF290, 4229EOF600, 4229EOF280, 4229EOF350, 4229EOF340, 4229EOF100, 4229EOF110, 4229EEL100, 4229EEL60, 4229EIN200, 4229EIN420, 4229EIN190, 4229EIN540, 4229EIN380, 4229EIN350, 4229EIN90, 4229EIN30, 4229EIN260, 4229EIN10, 4229EPL380, 4229EPL200, 4229EPL300, 4229EPV40, 4229GM20, 4229ELP510, 4229ELP110, 4229ELP30, 4229ELP300, 4229ELP540, 4229ELP550, 4229EPI190, 4229EPI240, 4229EPI270, 4229EME90, 4229EME60, 4229EOF410, 4229EOF270 FS+5d, 4229EOF550, 4229EOF230, 4229EOF140, 4229EOF240, 4229EOF50, 4229EOF630, 4229EEL250, 4229EEL260, 4229EEL220, 4229EEL290, 4229EEL70, 4229EEL230, 4229EIN240, 4229EIN400, 4229EIN390, 4229EIN370, 4229EIN290, 4229EIN80, 4229EPL240, 4229EPL320, 4229EPL260, 4229EPL270, 4229EPL50, 4229EPL30, 4229EPL110, 4229EPL360, 4229EPL180, 4229EPL40, A1630, 4229GM70, 4229GM50, 4229GM30, 4229ELP360, 4229ELP150, 4229ELP20, 4229ELP610, 4229ELP330, 4229EPR30, 4229EPR70, 4229EPR60, 4229EPR200, 4229EPI20, 4229EME30, 4229EME80, 4229EME110, 4229EOF610, 4229EOF20, 4229EOF160, 4229EOF60, 4229EOF70, 4229EOF330, 4229EOF300, 4229EEL80, 4229EIN280, 4229EIN140, 4229EIN150, 4229EIN120, 4229EIN330, 4229EIN50, 4229EPL310, 4229EPL230, 4229EPL400, 4229EPL120, 4229EPL370, 4229EPV10, 4229ETE160, 4229PFV210, 4229EME210 |  | 162d | 19d |  |  | 0 | ENP | 1 |  |  |
| 4229GM120 |  | Enppi scope completion | milestone | 0d | 2013-03-11 | 2013-03-11 | 4229PTA100 FF, 4229PKR100, 4229PIJ100, 4229PHB110, 4229PPB120 FF, 4229PNA100 FF, 4229PIB1090 FF, 4229EIN510 FF, 4229EPL500 FF, 4229EPL510 FF, 4229PMP100 FF, 4229PSU100 FF, 4229PEB100 FF, 4229PFI100 FF, 4229GM100 FF, 4229EPL530 FF, 4229PHS100, 4229PFF100 FF, 4229PPB100 FF, 4229PPV110 FF, 4229PRV100 FF, 4229PVE100 FF, 4229PPL120, 4229PFG100 FF, 4229PFG170 FF, 4229PCP100 FF, 4229PSV100 FF, 4229POV100 FF, 4229PPV120 FF, 4229GM110 FF, 4229EPL520 FF, 4229EPL540 FF, 4229PSG100 FF, 4229ELP580 FF, 4229EIN500 FF, 4229EIN490 FF, 4229EPV70 FF, 4229PAF100, 4229EIN480 FF, 4229EPL550 FF, 4229EPV80 FF, 4229PFL100, 4229PTR100 FF, 4229PIB100 FF, 4229PCV100 FF, 4229PCI100 FF, 4229ELP620 FF, 4229EEL280 FF |  | 199d |  |  | calendar | 0 | ENP | 1 |  |  |
|  | 5 | **L/O & Sea Fastening** |  |  | 2012-09-15 | 2013-04-07 |  |  |  |  |  |  |  |  |  |  |  |
|  | 3 | **01st Trip (P/L Spools 18" & 8")** |  |  | 2012-09-15 | 2012-10-22 |  |  |  |  |  |  |  |  |  |  |  |
| LOPS01 |  | Arrival of 01st Shipment Material Barge ( P/L Spools) | milestone | 0d | 2012-09-15 | 2012-09-15 |  |  | 0d | 16d | start on 2012-09-15 | 6 DAY WORK PER WEEK |  |  |  | 4 | PTJ |
| LOPS11 |  | Arrival of 01st Shipment Material Barge ( P/L Spools) | milestone | 0d | 2012-09-15 | 2012-09-15 |  |  | 0d | 16d | start on 2012-09-15 | 6 DAY WORK PER WEEK |  |  |  | 4 | PTJ |
| LOPS21 |  | Arrival of 01st Shipment Material Barge ( P/L Spools) | milestone | 0d | 2012-09-15 | 2012-09-15 |  |  | 0d | 16d | start on 2012-09-15 | 6 DAY WORK PER WEEK |  |  |  | 4 | PTJ |
| LOPS31 |  | Arrival of 01st Shipment Material Barge ( P/L Spools) | milestone | 0d | 2012-09-15 | 2012-09-15 |  |  | 0d | 16d | start on 2012-09-15 | 6 DAY WORK PER WEEK |  |  |  | 4 | PTJ |
| LOPS02 |  | 1st Shipment Material Barge Preparation |  | 12d | 2012-10-03 | 2012-10-17 | LOPS01 |  | 136d | 0d |  | 6 DAY WORK PER WEEK |  |  |  | 4 | PTJ |
| LOPS12 |  | 1st Shipment Material Barge Preparation |  | 12d | 2012-10-03 | 2012-10-17 | LOPS11 |  | 136d | 0d |  | 6 DAY WORK PER WEEK |  |  |  | 4 | PTJ |
| LOPS22 |  | 1st Shipment Material Barge Preparation |  | 12d | 2012-10-03 | 2012-10-17 | LOPS21 |  | 136d | 0d |  | 6 DAY WORK PER WEEK |  |  |  | 4 | PTJ |
| LOPS32 |  | 1st Shipment Material Barge Preparation |  | 12d | 2012-10-03 | 2012-10-17 | LOPS31 |  | 136d | 0d |  | 6 DAY WORK PER WEEK |  |  |  | 4 | PTJ |
| LOPS03 |  | L/O & Sea Fastening (P/L Spools 18" & 8") |  | 4d | 2012-10-18 | 2012-10-22 | LOPS02 |  | 136d | 0d |  | 6 DAY WORK PER WEEK |  |  |  | 4 | PTJ |
| LOPS13 |  | L/O & Sea Fastening (P/L Spools 18" & 8") |  | 4d | 2012-10-18 | 2012-10-22 | LOPS12 |  | 136d | 0d |  | 6 DAY WORK PER WEEK |  |  |  | 4 | PTJ |
| LOPS23 |  | L/O & Sea Fastening (P/L Spools 18" & 8") |  | 4d | 2012-10-18 | 2012-10-22 | LOPS22 |  | 136d | 0d |  | 6 DAY WORK PER WEEK |  |  |  | 4 | PTJ |
| LOPS33 |  | L/O & Sea Fastening (P/L Spools 18" & 8") |  | 4d | 2012-10-18 | 2012-10-22 | LOPS32 |  | 136d | 0d |  | 6 DAY WORK PER WEEK |  |  |  | 4 | PTJ |
|  | 1 | **02nd Trip (Jacket & Piles)** |  |  | 2012-12-01 | 2013-01-31 |  |  |  |  |  |  |  |  |  |  |  |
| LOJK01 |  | Arrival of 02nd Shipment Material Barge ( Jacket and Piles ) | milestone | 0d | 2012-12-01 | 2012-12-01 |  |  | 0d | 33d | start on 2012-12-01 | 6 DAY WORK PER WEEK |  |  |  | 4 | PTJ |
| LOJK11 |  | Arrival of 02nd Shipment Material Barge ( Jacket and Piles ) | milestone | 0d | 2012-12-01 | 2012-12-01 |  |  | 0d | 33d | start on 2012-12-01 | 6 DAY WORK PER WEEK |  |  |  | 4 | PTJ |
| LOJK21 |  | Arrival of 02nd Shipment Material Barge ( Jacket and Piles ) | milestone | 0d | 2012-12-01 | 2012-12-01 |  |  | 0d | 33d | start on 2012-12-01 | 6 DAY WORK PER WEEK |  |  |  | 4 | PTJ |
| LOJK31 |  | Arrival of 02nd Shipment Material Barge ( Jacket and Piles ) | milestone | 0d | 2012-12-01 | 2012-12-01 |  |  | 0d | 33d | start on 2012-12-01 | 6 DAY WORK PER WEEK |  |  |  | 4 | PTJ |
| LOJK02 |  | 02nd Shipment Material Barge Preparation |  | 12d | 2013-01-09 | 2013-01-22 | LOJK01, LOJK01 SS |  | 26d | 0d |  | 6 DAY WORK PER WEEK |  |  |  | 4 | PTJ |
| LOJK12 |  | 02nd Shipment Material Barge Preparation |  | 12d | 2013-01-09 | 2013-01-22 | LOJK11, LOJK11 SS |  | 26d | 0d |  | 6 DAY WORK PER WEEK |  |  |  | 4 | PTJ |
| LOJK22 |  | 02nd Shipment Material Barge Preparation |  | 12d | 2013-01-09 | 2013-01-22 | LOJK21, LOJK21 SS |  | 26d | 0d |  | 6 DAY WORK PER WEEK |  |  |  | 4 | PTJ |
| LOJK32 |  | 02nd Shipment Material Barge Preparation |  | 12d | 2013-01-09 | 2013-01-22 | LOJK31, LOJK31 SS |  | 26d | 0d |  | 6 DAY WORK PER WEEK |  |  |  | 4 | PTJ |
| LOJK03 |  | L/O & Sea fastening ( Jacket & Piles ) |  | 7d | 2013-01-23 | 2013-01-31 | LOJK02 |  | 26d | 0d |  | 6 DAY WORK PER WEEK |  |  |  | 4 | PTJ |
| LOJK13 |  | L/O & Sea fastening ( Jacket & Piles ) |  | 7d | 2013-01-23 | 2013-01-31 | LOJK12 |  | 26d | 0d |  | 6 DAY WORK PER WEEK |  |  |  | 4 | PTJ |
| LOJK23 |  | L/O & Sea fastening ( Jacket & Piles ) |  | 7d | 2013-01-23 | 2013-01-31 | LOJK22 |  | 26d | 0d |  | 6 DAY WORK PER WEEK |  |  |  | 4 | PTJ |
| LOJK33 |  | L/O & Sea fastening ( Jacket & Piles ) |  | 7d | 2013-01-23 | 2013-01-31 | LOJK32 |  | 26d | 0d |  | 6 DAY WORK PER WEEK |  |  |  | 4 | PTJ |

| ID | WBS | Activity | Type | Duration | Start | Finish | Predecessors | Complete | Planned start | Planned finish | Total float | Free float | Constraint | Calendar | Phase-2 | Resp | Work Package | Resp. | Phase-1 |
| --- | --- | --- | --- | --- | --- | --- | --- | --- | --- | --- | --- | --- | --- | --- | --- | --- | --- | --- | --- |
|  | 2 | **03rd Trip ( Deck)** |  |  | 2013-03-02 | 2013-04-07 |  |  |  |  |  |  |  |  |  |  |  |  |  |
| LODK01 |  | Arrival of 03rd Shipment Material Barge ( Deck C/W TSF ) | milestone | 0d | 2013-03-02 | 2013-03-02 |  |  |  |  | -0d | 13d | start on 2013-03-01 | 6 DAY WORK PER WEEK | 4 | PTJ |  |  |  |
| LODK11 |  | Arrival of 03rd Shipment Material Barge ( Deck C/W TSF ) | milestone | 0d | 2013-03-02 | 2013-03-02 |  |  |  |  | -0d | 13d | start on 2013-03-01 | 6 DAY WORK PER WEEK | 4 | PTJ |  |  |  |
| LODK21 |  | Arrival of 03rd Shipment Material Barge ( Deck C/W TSF ) | milestone | 0d | 2013-03-02 | 2013-03-02 |  |  |  |  | -0d | 13d | start on 2013-03-01 | 6 DAY WORK PER WEEK | 4 | PTJ |  |  |  |
| LODK31 |  | Arrival of 03rd Shipment Material Barge ( Deck C/W TSF ) | milestone | 0d | 2013-03-02 | 2013-03-02 |  |  |  |  | -0d | 13d | start on 2013-03-01 | 6 DAY WORK PER WEEK | 4 | PTJ |  |  |  |
| LODK02 |  | 3rd Shipment Material Barge Preparation |  | 12d | 2013-03-17 | 2013-03-30 | LODK01 |  |  |  | 0d |  |  | 6 DAY WORK PER WEEK | 4 | PTJ |  |  |  |
| LODK12 |  | 3rd Shipment Material Barge Preparation |  | 12d | 2013-03-17 | 2013-03-30 | LODK11 |  |  |  | 0d |  |  | 6 DAY WORK PER WEEK | 4 | PTJ |  |  |  |
| LODK22 |  | 3rd Shipment Material Barge Preparation |  | 12d | 2013-03-17 | 2013-03-30 | LODK21 |  |  |  | 0d |  |  | 6 DAY WORK PER WEEK | 4 | PTJ |  |  |  |
| LODK32 |  | 3rd Shipment Material Barge Preparation |  | 12d | 2013-03-17 | 2013-03-30 | LODK31 |  |  |  | 0d |  |  | 6 DAY WORK PER WEEK | 4 | PTJ |  |  |  |
| LODK03 |  | L/O & Sea fastening ( Deck) |  | 7d | 2013-03-31 | 2013-04-07 | LODK02 |  |  |  | 0d |  |  | 6 DAY WORK PER WEEK | 4 | PTJ |  |  |  |
| LODK13 |  | L/O & Sea fastening ( Deck) |  | 7d | 2013-03-31 | 2013-04-07 | LODK12 |  |  |  | 0d |  |  | 6 DAY WORK PER WEEK | 4 | PTJ |  |  |  |
| LODK23 |  | L/O & Sea fastening ( Deck) |  | 7d | 2013-03-31 | 2013-04-07 | LODK22 |  |  |  | 0d |  |  | 6 DAY WORK PER WEEK | 4 | PTJ |  |  |  |
| LODK33 |  | L/O & Sea fastening ( Deck) |  | 7d | 2013-03-31 | 2013-04-07 | LODK32 |  |  |  | 0d |  |  | 6 DAY WORK PER WEEK | 4 | PTJ |  |  |  |
|  | 7 | **General activities** |  |  | 2011-08-15 | 2012-06-04 |  |  |  |  |  |  |  |  |  |  |  |  |  |
| 4229GM50 |  | Platform Installation package- Approval |  | 20d | 2011-08-15 A | 2011-10-23 A | 4229GM30 | 100% | 2011-10-17 | 2011-11-20 |  |  |  |  |  |  | 1 | ENP | 1 |
| 4229GM30 |  | Platform fabrication package- Approval |  | 42d | 2011-08-15 A | 2011-10-23 A | 4229GM10 | 100% | 2011-08-15 | 2011-10-16 |  |  |  |  |  |  | 1 | ENP | 1 |
| 4229GM70 |  | P/L Installation package- Approval |  | 25d | 2011-09-28 A | 2011-11-02 A | 4229GM30 SS+30d | 100% |  |  |  |  |  |  |  |  | 4 | ENP | 1 |
| 4229GM20 |  | Project Design basis IFA |  | 10d | 2011-09-29 A | 2011-10-23 A | 4229EPR20 | 100% | 2011-09-29 | 2011-10-13 |  |  |  |  |  |  | 0 | ENP | 1 |
| 4229GM150 |  | Project quality assurance plan |  | 20d | 2011-10-17 A | 2011-11-13 A |  | 100% | 2011-10-30 | 2011-12-01 |  |  |  |  |  |  | 0 | ENP | 1 |
| 4229GM80 |  | Platform Installation package- Final |  | 20d | 2011-10-23 A | 2011-10-24 A | 4229GM50 FS+10d | 100% | 2011-11-13 | 2011-12-08 |  |  |  |  |  |  | 1 | ENP | 1 |
| 4229GM60 |  | Platform fabrication package- Final |  | 15d | 2011-10-23 A | 2011-10-24 A | 4229GM30 FS+10d | 100% | 2011-10-23 | 2011-11-17 |  |  |  |  |  |  | 1 | ENP | 1 |
| 4229GM40 |  | Final Project Design basis |  | 10d | 2011-11-14 A | 2011-11-27 A | 4229GM20 FS+10d | 100% |  |  |  |  |  |  |  |  | 0 | ENP | 1 |
| 4229GM90 |  | P/L Installation package- Final |  | 20d | 2011-11-24 A | 2011-11-29 A | 4229GM70 FS+10d | 100% | 2011-11-24 | 2011-12-21 |  |  |  |  |  |  | 4 | ENP | 1 |
| 4229GM130 |  | Internal Design Review meeting |  | 2d | 2012-06-03 | 2012-06-04 | 4229EPR80, 4229EPR130, 4229EPR120, 4229ELP150 |  |  |  | 333d | 171d |  |  |  |  | 3 | ENP | 1 |

| ID | WBS | Activity | Duration | Start | Finish | Predecessors | Complete | Remaining | Planned start | Planned finish | Total float | Free float | Expected finish | Work Package | Resp. | Phase-1 |
| --- | --- | --- | --- | --- | --- | --- | --- | --- | --- | --- | --- | --- | --- | --- | --- | --- |
|  | 2 | **Engineering** |  | 2011-08-15 | 2013-01-03 |  |  |  |  |  |  |  |  |  |  |  |
|  | 1 | **Process** |  | 2011-08-16 | 2012-08-02 |  |  |  |  |  |  |  |  |  |  |  |
|  | 1 | **Drawings /lists** |  | 2011-09-12 | 2012-07-10 |  |  |  |  |  |  |  |  |  |  |  |
| 4229EPR20 |  | Isuue PFD's / UFD's & material balance -Approval | 13d | 2011-09-12 A | 2011-09-27 A | 4229GM10 FS+1d, 4229EPR50 | 100% |  | 2011-09-12 | 2011-09-28 |  |  |  | 3 | ENP | 1 |
| 4229EPR40 |  | Issue P&ID'S / Equipment list-Approval | 10d | 2011-09-28 A | 2011-10-25 A | 4229EPR20 FS-1d, 4229GM10 | 100% |  | 2011-09-28 | 2011-10-12 |  |  |  | 3 | ENP | 1 |
| 4229EPR270 |  | GUPCO approval on PFD's & material balance | 10d | 2011-09-29 A | 2011-10-24 A | 4229EPR20 | 100% |  | 2011-09-29 | 2011-10-13 |  |  |  | 0 | GUP | 1 |
| 4229EPR280 |  | GUPCO approval on P&ID'S / Equipment list | 10d | 2011-10-24 A | 2011-11-22 A | 4229EPR40 | 100% |  | 2011-10-30 | 2011-11-17 |  |  |  | 0 | GUP | 1 |
| 4229EPR80 |  | Isuue PFD's / UFD's & material balance -Design | 7d | 2011-10-25 A | 2011-10-30 A | 4229EPR270, 4229EPR20 FS+10d, 4229EPR40, 4229EPR50 FS-5d | 100% |  | 2011-10-16 | 2011-10-24 |  |  |  | 3 | ENP | 1 |
| 4229EPR90 |  | C&E -Approval | 8d | 2011-10-26 A | 2011-11-23 A | 4229EPR40 | 100% |  | 2011-10-30 | 2011-11-15 |  |  |  | 0 | ENP | 1 |
| 4229EPR120 |  | Issue P&ID'S / Equipment list-Design | 10d | 2011-11-23 A | 2011-12-06 A | 4229EPR280, 4229EPR40 FS+10d, 4229EPR80 | 100% |  | 2011-11-14 | 2011-11-27 |  |  |  | 3 | ENP | 1 |
| 4229EPR290 |  | GUPCO approval on cause & effect | 10d | 2011-11-24 A | 2011-12-01 A | 4229EPR90 | 100% |  | 2011-11-03 | 2011-11-23 |  |  |  | 0 | GUP | 1 |
| 4229EPR130 |  | C&E -Design | 8d | 2011-12-01 A | 2011-12-11 A | 4229EPR120, 4229EPR290 | 100% |  | 2011-12-18 | 2011-12-27 |  |  |  | 0 | ENP | 1 |
| 4229EPR320 |  | Issue P&ID'S implementing HAZOP | 10d | 2012-02-12 A | 2012-03-12 A | 4229ELP130 | 100% |  | 2012-03-18 | 2012-03-29 |  |  |  | 3 | ENP | 1 |
| 4229EPR190 |  | Isuue PFD's / UFD's & material balance -Construction | 10d | 2012-04-19 A | 2012-07-05 | 4229ELP130, 4229EPR180 FF+5d | 90% | 1d | 2012-06-20 | 2012-07-03 | 305d | 0d | 2012-06-03 | 3 | ENP | 1 |
| 4229EPR180 |  | Issue P&ID'S / Equipment list-Construction | 15d | 2012-06-10 | 2012-06-28 | 4229PMP90 SS+30d, 4229PSV90 SS+20d, 4229PTR90 SS+30d, 4229PTA90 SS+30d, 4229PSU90 SS+30d, 4229PCI90 SS+20d |  |  |  |  | 136d | 0d |  | 3 | ENP | 1 |
| 4229EPR200 |  | C&E -Construction | 8d | 2012-07-01 | 2012-07-10 | 4229EPR180 |  |  |  |  | 291d | 0d |  | 0 | ENP | 1 |
|  | 2 | **Reports** |  | 2011-08-25 | 2012-07-31 |  |  |  |  |  |  |  |  |  |  |  |
| 4229EPR50 |  | Process simulation | 10d | 2011-08-25 A | 2011-09-11 A | 4229EPR10, 4229GM10 FS+5d | 100% |  |  |  |  |  |  | 0 | ENP | 1 |
| 4229EPR30 |  | Flow assurance report-Approval | 20d | 2011-09-26 A | 2011-11-03 A | 4229GM10, 4229EPR20 FS-3d | 100% |  | 2011-09-26 | 2011-10-24 |  |  |  | 0 | ENP | 1 |
| 4229EPR100 |  | Shutdown & control philosophy -Approval | 8d | 2011-10-26 A | 2011-11-23 A | 4229EPR40 | 100% |  | 2011-10-30 | 2011-11-15 |  |  |  | 0 | ENP | 1 |
| 4229EPR260 |  | Process simulation report-Approval | 8d | 2011-10-31 A | 2011-11-21 A | 4229EPR80 | 100% |  | 2011-10-31 | 2011-11-16 |  |  |  | 0 | ENP | 1 |
| 4229EPR220 |  | Process simulation final report | 10d | 2011-11-21 A | 2011-11-21 A | 4229EPR260 FS+5d | 100% |  | 2011-11-24 | 2011-12-07 |  |  |  | 0 | ENP | 1 |
| 4229EPR110 |  | Flow assurance report-Final | 5d | 2011-11-24 A | 2011-11-30 A | 4229EPR80, 4229EPR30 FS+5d | 100% |  |  |  |  |  |  | 0 | ENP | 1 |
| 4229EPR140 |  | Shutdown & control philosophy -Final | 10d | 2011-12-26 A | 2012-05-13 A | 4229EPR120 | 100% |  | 2011-12-08 | 2011-12-21 |  |  |  | 0 | ENP | 1 |
| 4229EPR210 |  | Commissioning ,Pre-commissioning & operating philosophy-IFA | 10d | 2012-07-01 | 2012-07-12 | 4229EPR180 |  |  |  |  | 292d | 0d |  | 3 | ENP | 3 |
| 4229EPR230 |  | Commissioning ,Pre-commissioning & operating philosophy-Final | 8d | 2012-07-22 | 2012-07-31 | 4229EPR210 FS+5d |  |  |  |  | 292d | 130d |  | 3 | ENP | 3 |

| ID | WBS | Activity | Duration | Start | Finish | Predecessors | Complete | Remaining | Planned start | Planned finish | Total float | Free float | Constraint | Expected finish | Global Commodity Code | Global Activity Code | Work Package | Resp. | Phase-1 |
| --- | --- | --- | --- | --- | --- | --- | --- | --- | --- | --- | --- | --- | --- | --- | --- | --- | --- | --- | --- |
|  | 3 | **MRQ's** |  | 2011-08-16 | 2012-08-02 |  |  |  |  |  |  |  |  |  |  |  |  |  |  |
| 4229EPR10 |  | Issue MRQ for Chemical injection | 7d | 2011-08-16 A | 2011-08-24 A | 4229GM10 FS+1d | 100% |  |  |  |  |  |  |  | 16506 | 01 | 3 | ENP | 3 |
| 4229EPR70 |  | T.E.R for Chemical injection | 20d | 2011-09-19 A | 2011-11-24 A | 4229PCI20 | 100% |  | 2011-09-19 | 2011-10-17 |  |  |  |  | 16506 | 09 | 3 | ENP | 3 |
| 4229EPR60 |  | Issue MRQ for PSV | 5d | 2011-10-09 A | 2011-10-19 A | 4229EPR20 FS+5d | 100% |  | 2011-10-09 | 2011-10-13 |  |  |  |  | 24701 | 01 | 3 | ENP | 3 |
| 4229EPR160 |  | T.E.R for PSV | 20d | 2011-11-17 A | 2012-01-31 A | 4229PSV20 | 100% |  | 2011-11-16 | 2011-12-13 |  |  |  |  | 24701 | 09 | 3 | ENP | 3 |
| 4229EPR310 |  | RE-ISSUE T.E.R for Chemical injection | 15d | 2012-01-01 A | 2012-02-21 A |  | 100% |  | 2012-01-01 | 2012-01-19 |  |  |  |  |  |  | 3 | ENP | 3 |
| 4229EPR150 |  | MRP for Chemical injection | 3d | 2012-03-25 A | 2012-04-05 A | 4229PCI60 | 100% |  | 2012-03-21 | 2012-03-25 |  |  |  |  | 16506 | 14 | 3 | ENP | 3 |
| 4229EPR250 |  | V.P.R for chemical injection | 50d | 2012-04-01 A | 2012-07-05 | 4229PCI90 SS+30d | 60% | 20d | 2012-05-20 | 2012-07-26 | 310d | 33d |  |  |  |  | 3 | ENP | 3 |
| 4229EPR170 |  | MRP for PSV | 5d | 2012-04-05 A | 2012-04-09 A | 4229PSV60 | 100% |  | 2012-04-09 | 2012-04-15 |  |  |  |  | 24701 | 14 | 3 | ENP | 3 |
| 4229EPR240 |  | V.P.R for P.S.V | 40d | 2012-04-17 A | 2012-08-02 | 4229PSV90 SS+30d |  | 40d | 2012-05-17 | 2012-07-11 | 290d | 33d |  |  |  |  | 3 | ENP | 3 |
|  | 10 | **Loss prevention** |  | 2011-09-29 | 2012-10-04 |  |  |  |  |  |  |  |  |  |  |  |  |  |  |
|  | 1 | **Drawings /lists** |  | 2011-11-10 | 2012-08-30 |  |  |  |  |  |  |  |  |  |  |  |  |  |  |
| 4229ELP40 |  | Hazardous area classification schedule-IFA | 3d | 2011-11-10 A | 2011-11-13 A | 4229EPI40 | 100% |  | 2011-12-18 | 2011-12-20 |  |  |  |  |  |  | 3 | ENP | 1 |
| 4229ELP510 |  | F&G installation details -Approval | 10d | 2011-11-13 A | 2012-02-15 A | 4229ELP40 | 100% |  | 2011-12-04 | 2011-12-15 |  |  |  |  |  |  | 3 | ENP | 1 |
| 4229ELP150 |  | Hazardous area classification schedule-IFD | 3d | 2011-11-20 A | 2011-11-23 A | 4229EPI80 | 100% |  | 2012-01-09 | 2012-01-11 |  |  |  |  |  |  | 3 | ENP | 1 |
| 4229ELP70 |  | F& G detection layout -Approval | 10d | 2011-11-22 A | 2011-12-28 A | 4229EPI40 | 100% |  | 2011-12-04 | 2011-12-15 |  |  |  |  |  |  | 3 | ENP | 1 |
| 4229ELP80 |  | Fire fighting, Safety equipment & escape route layout-Approval | 10d | 2011-11-22 A | 2011-12-29 A | 4229EPI40 FS+5d | 100% |  | 2011-12-04 | 2011-12-15 |  |  |  |  |  |  | 3 | ENP | 1 |
| 4229ELP110 |  | F& G cable routing -Approval | 5d | 2012-01-01 A | 2012-01-26 A | 4229EIN140 SS | 100% |  | 2012-01-01 | 2012-01-05 |  |  |  |  |  |  | 3 | ENP | 1 |
| 4229ELP480 |  | Interconnection wiring diagram-Approval | 5d | 2012-01-04 A | 2012-02-01 A | 4229ELP80 | 100% |  | 2012-01-04 | 2012-01-10 |  |  |  |  |  |  | 3 | ENP | 1 |
| 4229ELP450 |  | F& G cable list -Approval | 5d | 2012-01-09 A | 2012-01-19 A | 4229ELP110 | 100% |  | 2012-01-09 | 2012-01-15 |  |  | start on or after 2012-01-09 |  |  |  | 3 | ENP | 1 |
| 4229ELP460 |  | F& G cable list -Design | 5d | 2012-01-15 A | 2012-01-24 A | 4229ELP260 FS+7d | 100% |  | 2012-03-04 | 2012-03-08 |  |  |  |  |  |  | 3 | ENP | 1 |
| 4229ELP220 |  | F& G detection layout -Design | 15d | 2012-01-19 A | 2012-02-27 A | 4229EPI80 FS+10d | 100% |  | 2012-03-04 | 2012-03-22 |  |  |  |  |  |  | 3 | ENP | 1 |
| 4229ELP230 |  | Fire fighting, Safety equipment & escape route layout-Design | 15d | 2012-01-29 A | 2012-01-29 A | 4229EPI80 | 100% |  | 2012-03-04 | 2012-03-22 |  |  | start on or after 2012-01-01 |  |  |  | 3 | ENP | 1 |
| 4229ELP260 |  | F& G cable routing -Design | 10d | 2012-01-29 A | 2012-02-06 A | 4229EIN280 SS | 100% |  | 2012-03-06 | 2012-03-19 |  |  |  |  |  |  | 3 | ENP | 1 |
| 4229ELP520 |  | F&G installation details -Design | 10d | 2012-02-26 A | 2012-06-03 | 4229ELP150 | 100% | 0d | 2012-03-04 | 2012-03-15 | 330d | 0d |  | 2012-05-31 |  |  | 3 | ENP | 1 |
| 4229ELP490 |  | Interconnection wiring diagram-Design | 10d | 2012-03-15 A | 2012-03-20 A | 4229ELP230 FS+5d | 100% |  | 2012-04-01 | 2012-04-12 |  |  |  |  |  |  | 3 | ENP | 1 |
| 4229ELP360 |  | F& G detection layout -Construction | 15d | 2012-07-22 | 2012-08-09 | 4229EPI160 |  |  |  |  | 280d | 5d |  |  |  |  | 3 | ENP | 1 |
| 4229ELP370 |  | Hazardous area classification schedule-IFC | 3d | 2012-07-22 | 2012-07-24 | 4229EPI160 |  |  |  |  | 277d | 0d |  |  |  |  | 3 | ENP | 1 |
| 4229ELP380 |  | Fire fighting, Safety equipment & escape route layout-Construction | 10d | 2012-07-22 | 2012-08-02 | 4229EPI160 |  |  |  |  | 275d | 0d |  |  |  |  | 3 | ENP | 1 |
| 4229ELP390 |  | F& G cable routing -Construction | 10d | 2012-07-29 | 2012-08-09 | 4229EIN460 SS |  |  |  |  | 275d | 0d |  |  |  |  | 3 | ENP | 1 |
| 4229ELP470 |  | F& G cable list -Construction | 5d | 2012-08-05 | 2012-08-09 | 4229ELP390 FF |  |  |  |  | 280d | 5d |  |  |  |  | 3 | ENP | 1 |
| 4229ELP500 |  | Interconnection wiring diagram-Construction | 10d | 2012-08-05 | 2012-08-16 | 4229ELP380 |  |  |  |  | 275d | 0d |  |  |  |  | 3 | ENP | 1 |
| 4229ELP530 |  | F&G installation details -Construction | 5d | 2012-08-26 | 2012-08-30 | 4229ELP380, 4229ELP390, 4229ELP470, 4229ELP80, 4229ELP370, 4229ELP500, 4229ELP450, 4229ELP260, 4229ELP150, 4229ELP510, 4229ELP220, 4229ELP490, 4229ELP520, 4229ELP70, 4229ELP110, 4229ELP40, 4229ELP460, 4229ELP360, 4229ELP230, 4229ELP480 |  |  |  |  | 275d | 113d |  |  |  |  | 3 | ENP | 1 |

| ID | WBS | Activity | Duration | Start | Finish | Predecessors | Complete | Remaining | Planned start | Planned finish | Total float | Free float | Constraint | Expected finish | Work Package | Resp. | Phase-1 |
| --- | --- | --- | --- | --- | --- | --- | --- | --- | --- | --- | --- | --- | --- | --- | --- | --- | --- |
|  | 2 | **Reports** |  | 2011-09-29 | 2012-08-16 |  |  |  |  |  |  |  |  |  |  |  |  |
| 4229ELP10 |  | HSE Plan -Approval | 10d | 2011-09-29 A | 2011-10-13 A | 4229EPR20 | 100% |  |  |  |  |  |  |  | 0 | ENP | 1 |
| 4229ELP30 |  | HSE philosophy - Approval | 10d | 2011-10-16 A | 2011-11-03 A | 4229ELP10 | 100% |  | 2011-12-04 | 2011-12-15 |  |  |  |  | 0 | ENP | 1 |
| 4229ELP20 |  | HSE Plan -Final | 5d | 2011-11-13 A | 2011-11-15 A | 4229ELP10 FS+5d | 100% |  | 2011-12-04 | 2011-12-08 |  |  |  |  | 0 | ENP | 1 |
| 4229ELP90 |  | HSE philosophy - Final | 5d | 2011-11-20 A | 2011-11-23 A | 4229ELP30 FS+5d | 100% |  | 2011-12-25 | 2011-12-29 |  |  |  |  | 0 | ENP | 1 |
| 4229ELP100 |  | Fire & explosion HAZARD analysis- Approval | 15d | 2011-11-22 A | 2011-11-23 A | 4229EPI40 | 100% |  | 2011-12-04 | 2011-12-22 |  |  |  |  | 3 | ENP | 1 |
| 4229ELP130 |  | HAZOP meeting /Report | 10d | 2012-02-02 A | 2012-02-21 A | 4229EPR120 FS+1d | 100% |  | 2012-03-04 | 2012-03-15 |  |  | start on 2012-02-06 |  | 0 | ENP | 1 |
| 4229ELP190 |  | SCE performance standards-Approval | 10d | 2012-02-09 A | 2012-02-22 A | 4229ELP140 FS+12d | 100% |  | 2012-03-20 | 2012-04-02 |  |  |  |  | 0 | ENP | 1 |
| 4229ELP140 |  | Fire & Explosion HAZARD analysis- Final | 10d | 2012-02-16 A | 2012-03-05 A | 4229ELP100 FS+9d | 100% |  | 2012-01-01 | 2012-01-12 |  |  |  |  | 3 | ENP | 1 |
| 4229ELP50 |  | Update & issue safety life cycle-Approval | 0d | 2012-02-19 A | 2012-02-23 A | 4229ELP10 FS+36d | 100% |  | 2012-03-04 | 2012-03-04 |  |  |  |  | 3 | ENP | 1 |
| 4229ELP200 |  | QRA -Approval | 15d | 2012-02-26 A | 2012-03-20 A | 4229EPI80 FS+15d | 100% |  | 2012-03-04 | 2012-03-22 |  |  |  |  | 0 | ENP | 1 |
| 4229ELP270 |  | SCE performance standards-Final | 5d | 2012-03-15 A | 2012-03-20 A | 4229ELP190 FS+10d | 100% |  | 2012-04-01 | 2012-04-05 |  |  |  |  | 0 | ENP | 1 |
| 4229ELP210 |  | HAZOP close out report | 15d | 2012-03-28 A | 2012-06-10 | 4229ELP130 FS+30d | 60% | 6d | 2012-04-03 | 2012-04-23 | 296d | 0d |  | 2012-06-10 | 0 | ENP | 1 |
| 4229ELP240 |  | HAZID report | 10d | 2012-03-28 A | 2012-05-03 A | 4229EPI80 FS+10d | 100% |  | 2012-04-01 | 2012-04-12 |  |  |  |  | 0 | ENP | 1 |
| 4229ELP250 |  | ENVID report | 10d | 2012-03-28 A | 2012-05-03 A | 4229ELP240 SS | 100% |  | 2012-04-01 | 2012-04-12 |  |  |  |  | 0 | ENP | 1 |
| 4229ELP280 |  | PSSR report-Approval | 15d | 2012-03-31 A | 2012-03-31 A | 4229EPI80 FS+20d | 100% |  | 2012-04-01 | 2012-04-19 |  |  |  |  | 0 | ENP | 1 |
| 4229ELP350 |  | PSSR report-Final | 10d | 2012-03-31 A | 2012-03-31 A | 4229ELP280 FS+10d | 100% |  | 2012-04-15 | 2012-04-26 |  |  |  |  | 0 | ENP | 1 |
| 4229ELP540 |  | Update & issue safety life cycle-Design | 22d | 2012-04-05 A | 2012-04-10 A | 4229ELP50 | 100% |  | 2012-04-01 | 2012-04-30 |  |  |  |  | 3 | ENP | 1 |
| 4229ELP300 |  | QRA -Final | 15d | 2012-04-15 A | 2012-04-18 A | 4229ELP200 FS+5d | 100% |  | 2012-04-15 | 2012-05-03 |  |  |  |  | 0 | ENP | 1 |
| 4229ELP160 |  | SIL Review report-Approval | 10d | 2012-04-19 A | 2012-05-09 A | 4229EPR130, 4229EPR120, 4229ELP130 SS | 100% |  | 2012-04-19 | 2012-05-02 |  |  | start on or after 2012-04-19 |  | 0 | ENP | 1 |
| 4229ELP410 |  | SIL Review report-Final | 11d | 2012-04-23 A | 2012-05-30 A | 4229ELP160 FS+5d | 100% |  | 2012-06-03 | 2012-06-17 |  |  |  |  | 0 | ENP | 1 |
| 4229ELP120 |  | SAMS report-Approval | 10d | 2012-06-11 | 2012-06-24 | 4229ELP130 FF, 4229ELP190, 4229ELP280, 4229ELP30, 4229ELP210, 4229ELP130, 4229ELP250, 4229ELP160, 4229ELP200, 4229ELP240 |  |  |  |  | 296d | 0d |  |  | 0 | ENP | 1 |
| 4229ELP180 |  | SAMS report-Final | 10d | 2012-07-02 | 2012-07-15 | 4229ELP120 FS+5d |  |  |  |  | 296d | 0d |  |  | 0 | ENP | 1 |
| 4229ELP340 |  | HAZARD register | 8d | 2012-07-16 | 2012-07-25 | 4229ELP90, 4229ELP120, 4229ELP180, 4229ELP300, 4229ELP190, 4229ELP160, 4229ELP30, 4229ELP240, 4229ELP210, 4229ELP10, 4229ELP20, 4229ELP100, 4229ELP250, 4229ELP130, 4229ELP280, 4229ELP50, 4229ELP140, 4229ELP200 |  |  |  |  | 296d | 134d |  |  | 3 | ENP | 1 |
| 4229ELP290 |  | CHAZOP review report | 12d | 2012-08-01 | 2012-08-16 | 4229ELP210 FS+12d, 4229PSG90 SS+60d |  |  |  |  | 280d | 118d |  |  | 0 | ENP | 1 |

| ID | WBS | Activity | Duration | Start | Finish | Predecessors | Complete | Planned start | Planned finish | Total float | Free float | Constraint | Global Commodity Code | Global Activity Code | Work Package | Resp. | Phase-1 |
| --- | --- | --- | --- | --- | --- | --- | --- | --- | --- | --- | --- | --- | --- | --- | --- | --- | --- |
|  | 3 | **MRQ's** |  | 2011-11-21 | 2012-10-04 |  |  |  |  |  |  |  |  |  |  |  |  |
| 4229ELP60 |  | MRQ for fire fighting system | 8d | 2011-11-21 A | 2011-11-22 A | 4229EPI40 | 100% | 2011-12-04 | 2011-12-13 |  |  |  | 19004 | 01 | 3 | ENP | 3 |
| 4229ELP550 |  | MRQ for fire & Gas detection | 2d | 2011-11-28 A | 2012-01-01 A |  | 100% | 2011-12-08 | 2011-12-11 |  |  |  | 25205 | 01 | 3 | ENP | 3 |
| 4229ELP590 |  | MRQ for life saving equioment | 5d | 2011-12-29 A | 2012-01-02 A | 4229ELP550 FF | 100% | 2012-01-01 | 2012-01-05 |  |  |  | 19003 | 01 | 3 | ENP | 3 |
| 4229ELP600 |  | T.E.R for life saving equipment | 15d | 2012-02-15 A | 2012-05-15 A | 4229PFG120 | 100% | 2012-03-04 | 2012-03-22 |  |  |  | 19003 | 09 | 3 | ENP | 3 |
| 4229ELP560 |  | T.E.R for fire & Gas detection | 15d | 2012-02-27 A | 2012-05-03 A | 4229PFG20 | 100% | 2012-03-20 | 2012-04-09 |  |  |  | 25205 | 09 | 3 | ENP | 3 |
| 4229ELP170 |  | T.E.R for fire fighting system | 20d | 2012-04-03 A | 2012-05-29 A | 4229PFF20 | 100% | 2012-04-03 | 2012-04-30 |  |  | start on or after 2012-04-03 | 19004 | 09 | 3 | ENP | 3 |
| 4229ELP610 |  | MRP for life saving equipment | 5d | 2012-05-15 A | 2012-05-15 A | 4229PFG140 | 100% | 2012-06-18 | 2012-06-24 |  |  |  | 19003 | 14 | 3 | ENP | 3 |
| 4229ELP620 |  | V.P.R for life saving equipment | 30d | 2012-05-15 A | 2012-05-15 A | 4229PFG160 SS+30d | 100% | 2012-07-08 | 2012-08-16 |  |  |  |  |  | 3 | ENP | 3 |
| 4229ELP570 |  | MRP for fire & Gas detection | 5d | 2012-05-28 A | 2012-05-29 A | 4229PFG60 | 100% | 2012-06-03 | 2012-06-07 |  |  |  | 25205 | 14 | 3 | ENP | 3 |
| 4229ELP330 |  | MRP for fire fighting system | 5d | 2012-06-27 | 2012-07-03 | 4229PFF60 |  |  |  | 189d | 0d |  | 19004 | 14 | 3 | ENP | 3 |
| 4229ELP580 |  | V.P.R for fire & Gas detection | 35d | 2012-07-15 | 2012-09-06 | 4229PFG90 SS+30d |  |  |  | 270d | 127d |  |  |  | 3 | ENP | 3 |
| 4229ELP400 |  | V.P.R for fire fighting system | 30d | 2012-08-26 | 2012-10-04 | 4229PFF90 SS+30d |  |  |  | 250d | 88d |  |  |  | 3 | ENP | 3 |
|  | 4 | **Additional studies** |  | 2012-02-15 | 2012-05-10 |  |  |  |  |  |  |  |  |  |  |  |  |
| A1620 |  | Riser impact risk assessment study -IFA | 1d | 2012-02-15 A | 2012-02-27 A |  | 100% | 2012-04-29 | 2012-04-29 |  |  |  |  |  | 4 | ENP | 1 |
| A1630 |  | Final Riser impact risk assessment study | 5d | 2012-02-28 A | 2012-05-10 A |  | 100% | 2012-04-29 | 2012-05-03 |  |  |  |  |  | 4 | ENP | 1 |
|  | 2 | **Piping** |  | 2011-08-15 | 2012-09-30 |  |  |  |  |  |  |  |  |  |  |  |  |
|  | 1 | **Drawing/ lists** |  | 2011-10-24 | 2012-09-06 |  |  |  |  |  |  |  |  |  |  |  |  |
| 4229EPI20 |  | Line designation table -Approval | 6d | 2011-10-24 A | 2012-01-02 A | 4229EPR40 | 100% | 2011-10-30 | 2011-11-13 |  |  |  |  |  | 3 | ENP | 1 |
| 4229EPI240 |  | Piping & Valves classes - Approval (Deleted) | 5d | 2011-10-24 A | 2011-12-06 A | 4229EPR40 | 100% | 2011-10-30 | 2011-11-03 |  |  |  |  |  | 3 | ENP | 1 |
| 4229EPI260 |  | Piping & Valves classes - Design | 5d | 2011-10-24 A | 2011-12-06 A | 4229EPR120 | 100% | 2011-12-08 | 2011-12-14 |  |  |  |  |  | 3 | ENP | 1 |
| 4229EPI40 |  | Issue plot plans-Approval | 10d | 2011-10-26 A | 2011-11-21 A | 4229EPR40 | 100% | 2011-12-04 | 2011-12-15 |  |  |  |  |  | 3 | ENP | 1 |
| 4229EPI80 |  | Issue plot plans-Design | 15d | 2011-12-20 A | 2012-01-05 A | 4229EPR120, 4229EPI40 FS+5d | 100% | 2011-12-20 | 2012-01-09 |  |  |  |  |  | 3 | ENP | 1 |
| 4229EPI100 |  | Issue GA's -Approval | 28d | 2011-12-22 A | 2012-01-17 A | 4229EPI40 | 100% | 2012-01-01 | 2012-02-08 |  |  |  |  |  | 3 | ENP | 1 |
| 4229EPI120 |  | Line designation table -Design | 8d | 2012-01-10 A | 2012-01-24 A | 4229EPR120, 4229EPI20 FS+5d | 100% | 2012-01-10 | 2012-01-19 |  |  |  |  |  | 3 | ENP | 1 |
| 4229EPI130 |  | Issue GA's -Design | 20d | 2012-02-02 A | 2012-02-16 A | 4229EPI80 FF | 100% | 2012-01-29 | 2012-02-23 |  |  |  |  |  | 3 | ENP | 1 |
| 4229EPI160 |  | Issue plot plans-Construction | 15d | 2012-07-01 | 2012-07-19 | 4229PPV90 SS, 4229PRV90 SS, 4229PSG90 SS, 4229PSU90 SS, 4229PNA90 SS, 4229PCV60, 4229EPR180, 4229PVE90 SS, 4229PCI90 SS, 4229PTR90 SS, 4229PMP90 SS, 4229PSV90 SS, 4229POV90 SS |  |  |  | 136d | 0d |  |  |  | 3 | ENP | 1 |
| 4229EPI180 |  | Line designation table -Construction | 8d | 2012-07-01 | 2012-07-10 | 4229EPR180 |  |  |  | 297d | 0d |  |  |  | 3 | ENP | 1 |
| 4229EPI270 |  | Piping & Valves classes - Construction | 5d | 2012-07-01 | 2012-07-05 | 4229EPR180 |  |  |  | 310d | 148d |  |  |  | 3 | ENP | 1 |
| 4229EPI250 |  | Critical line list-Construction | 10d | 2012-07-11 | 2012-07-24 | 4229EPI180 |  |  |  | 297d | 135d |  |  |  | 3 | ENP | 1 |
| 4229EPI170 |  | Hydrotest maps & loops- Construction | 15d | 2012-07-16 | 2012-08-05 | 4229EPI190 FF+1d, 4229EPR180 |  |  |  | 289d | 127d |  |  |  | 0 | ENP | 1 |
| 4229EPI190 |  | Issue GA's / ISO's -construction(first batch) | 10d | 2012-07-22 | 2012-08-02 | 4229EPI160 |  |  |  | 136d | 0d |  |  |  | 3 | ENP | 1 |
| 4229EPI280 |  | Issue GA's / ISO's -construction(Second batch)- Final MTO | 15d | 2012-08-05 | 2012-08-30 | 4229EPI190 |  |  |  | 136d | 0d |  |  |  | 3 | ENP | 1 |
| 4229EPI220 |  | Piping supports list / MTO -IFC | 10d | 2012-08-26 | 2012-09-06 | 4229EPI190, 4229EPI280 FF+5d |  |  |  | 265d | 0d |  |  |  | 3 | ENP | 1 |
| 4229EPI230 |  | Standard pipe supports -Construction | 5d | 2012-08-26 | 2012-08-30 | 4229EPI190 SS+20d |  |  |  | 275d | 113d |  |  |  | 3 | ENP | 1 |

| ID | WBS | Activity | Duration | Start | Finish | Predecessors | Complete | Remaining | Planned start | Planned finish | Total float | Free float | Constraint | Expected finish | Work Package | Resp. | Phase-1 | Global Commodity Code | Global Activity Code |
| --- | --- | --- | --- | --- | --- | --- | --- | --- | --- | --- | --- | --- | --- | --- | --- | --- | --- | --- | --- |
|  | 3 | **Reports** |  | 2012-05-24 | 2012-07-29 |  |  |  |  |  |  |  |  |  |  |  |  |  |  |
| 4229EPI200 |  | Stress analysis report | 19d | 2012-05-24 A | 2012-07-29 | 4229EPI160 | 68% | 6d | 2012-07-03 | 2012-07-29 | 279d | 0d |  | 2012-07-29 | 3 | ENP | 1 |  |  |
|  | 2 | **MRQ's** |  | 2011-08-15 | 2012-09-30 |  |  |  |  |  |  |  |  |  |  |  |  |  |  |
| 4229EPI10 |  | Issue MRQ for L&R traps | 7d | 2011-08-15 A | 2011-08-23 A | 4229GM10 | 100% |  |  |  |  |  |  |  | 3 | ENP | 3 | 47101 | 01 |
| 4229EPI30 |  | T.E.R for L&R | 15d | 2011-09-22 A | 2011-12-04 A | 4229PTR20 | 100% |  | 2011-09-22 | 2011-10-13 |  |  |  |  | 3 | ENP | 3 | 47101 | 09 |
| 4229EPI60 |  | Issue MRQ for Piping bulk | 8d | 2011-11-15 A | 2011-11-24 A | 4229GM10, 4229EPR80 FF+4d | 100% |  | 2011-12-04 | 2011-12-13 |  |  |  |  | 3 | ENP | 3 | 40001 | 01 |
| A1000 |  | Thermal insulation specification | 5d | 2011-11-21 A | 2011-11-24 A | 4229EPI50 SS, 4229EPI10, 4229EPI60 | 100% |  | 2011-12-04 | 2011-12-08 |  |  |  |  | 3 | ENP | 1 |  |  |
| A1010 |  | Piping fabrication and erection specification | 5d | 2011-11-21 A | 2011-11-27 A | A1000 | 100% |  | 2011-12-04 | 2011-12-08 |  |  |  |  | 3 | ENP | 1 |  |  |
| A1020 |  | Field test of piping specification. | 5d | 2011-11-21 A | 2011-11-24 A | A1010 | 100% |  | 2011-12-11 | 2011-12-15 |  |  |  |  | 3 | ENP | 1 |  |  |
| 4229EPI340 |  | Issue MRQ for Gate, Globe & butterfly valves | 1d | 2011-11-24 A | 2011-12-08 A |  | 100% |  | 2012-04-29 | 2012-04-29 |  |  |  |  | 3 | ENP | 3 | 40002 | 01 |
| 4229EPI50 |  | Issue MRQ for Ball valves | 5d | 2011-11-24 A | 2011-12-08 A | 4229GM10, 4229EPR40 | 100% |  | 2011-12-04 | 2011-12-08 |  |  |  |  | 3 | ENP | 3 | 42206 | 01 |
| 4229EPI90 |  | T.E.R for Piping bulk | 15d | 2011-12-22 A | 2012-01-26 A | 4229PPB20 | 100% |  | 2011-12-13 | 2012-01-02 |  |  |  |  | 3 | ENP | 3 | 40001 | 09 |
| 4229EPI290 |  | T.E.R for Piping Ball Valves | 21d | 2012-01-12 A | 2012-02-13 A |  | 100% |  | 2012-03-04 | 2012-04-01 |  |  |  |  | 3 | ENP | 3 | 42206 | 09 |
| 4229EPI110 |  | T.E.R for Piping Gate, Globe & Butterfly valves | 20d | 2012-01-12 A | 2012-02-08 A | 4229PPV20 | 100% |  | 2012-01-12 | 2012-02-09 |  |  | start on or after 2012-01-12 |  | 3 | ENP | 3 | 40002 | 09 |
| 4229EPI70 |  | MRP for L&R | 5d | 2012-02-09 A | 2012-02-20 A | 4229PTR60 | 100% |  | 2012-03-04 | 2012-03-08 |  |  |  |  | 3 | ENP | 3 | 47101 | 14 |
| 4229EPI140 |  | MRP for Piping bulk | 5d | 2012-03-19 A | 2012-03-27 A | 4229PPB60 | 100% |  | 2012-03-20 | 2012-03-26 |  |  |  |  | 3 | ENP | 3 | 40001 | 14 |
| 4229EPI210 |  | V.P.R for launcher & receiver traps | 80d | 2012-03-27 A | 2012-09-30 | 4229PTR90 SS+30d |  | 80d | 2012-03-25 | 2012-07-12 | 254d | 37d |  |  | 3 | ENP | 3 |  |  |
| 4229EPI150 |  | MRP for Piping Gate, Globe & Butterfly valves | 5d | 2012-04-08 A | 2012-04-12 A | 4229PPV60 | 100% |  | 2012-04-12 | 2012-04-18 |  |  |  |  | 3 | ENP | 3 | 40002 | 14 |
| 4229EPI300 |  | MRP for Piping Ball Valves | 11d | 2012-04-08 A | 2012-04-12 A | 4229PBV70 | 100% |  | 2012-04-12 | 2012-04-26 |  |  |  |  | 3 | ENP | 3 | 42206 | 14 |
| 4229EPI310 |  | Additional piping bulk MRQ | 15d | 2012-04-15 A | 2012-05-16 A |  | 100% |  | 2012-04-29 | 2012-05-17 |  |  |  |  | 3 | ENP | 3 | 40003 | 01 |
| 4229EPI320 |  | Additional piping bulk T.E.R | 20d | 2012-06-11 | 2012-07-08 | 4229PAP110 |  |  |  |  | 168d | 0d |  |  | 3 | ENP | 3 | 40003 | 09 |
| 4229EPI330 |  | Additional piping bulk MRP | 5d | 2012-08-08 | 2012-08-14 | 4229PAP160 |  |  |  |  | 275d | 0d |  |  | 3 | ENP | 3 | 40003 | 14 |
|  | 3 | **Mechanical** |  | 2011-09-25 | 2012-12-05 |  |  |  |  |  |  |  |  |  |  |  |  |  |  |
|  | 1 | **Drawings /lists** |  | 2011-09-25 | 2012-07-12 |  |  |  |  |  |  |  |  |  |  |  |  |  |  |
| 4229EME20 |  | Material selection Guide IFA | 14d | 2011-09-25 A | 2011-10-27 A | 4229EPR20 FS-4d | 100% |  | 2011-09-25 | 2011-10-13 |  |  |  |  | 0 | ENP | 1 |  |  |
| 4229EME30 |  | Motor load list IFA | 5d | 2011-10-24 A | 2011-11-16 A | 4229EPR40 | 100% |  | 2011-10-13 | 2011-10-19 |  |  |  |  | 0 | ENP | 1 |  |  |
| 4229EME40 |  | Material selection Guide IFD | 5d | 2012-01-17 A | 2012-01-22 A | 4229EPR80 | 100% |  | 2012-01-17 | 2012-01-23 |  |  | start on 2012-01-17 |  | 0 | ENP | 1 |  |  |
| 4229EME70 |  | Final Motor load list | 5d | 2012-07-01 | 2012-07-05 | 4229EPR180, 4229EPR120 |  |  |  |  | 295d | 0d |  |  | 3 | ENP | 1 |  |  |
| 4229EME210 |  | Material Selection Guide IFF | 5d | 2012-07-08 | 2012-07-12 | 4229EPR190 |  |  |  |  | 305d | 143d |  |  | 0 | ENP | 1 |  |  |

| ID | WBS | Activity | Duration | Start | Finish | Predecessors | Complete | Remaining | Planned start | Planned finish | Total float | Free float | Expected finish | Work Package | Resp. | Phase-1 | Global Commodity Code | Global Activity Code |
| --- | --- | --- | --- | --- | --- | --- | --- | --- | --- | --- | --- | --- | --- | --- | --- | --- | --- | --- |
|  | 2 | **Reports** |  | 2011-11-30 | 2012-04-04 |  |  |  |  |  |  |  |  |  |  |  |  |  |
| 4229EME50 |  | Material handling study IFA | 10d | 2011-11-30 A | 2012-01-08 A | 4229EPI40 | 100% |  | 2011-12-04 | 2011-12-15 |  |  |  | 0 | ENP | 1 |  |  |
| 4229EME80 |  | Material Selection philosophy report-Approval | 10d | 2011-11-30 A | 2012-01-29 A | 4229EME50 | 100% |  | 2011-12-18 | 2011-12-29 |  |  |  | 0 | ENP | 1 |  |  |
| 4229EME90 |  | Final Material handling study | 6d | 2012-01-29 A | 2012-04-04 A | 4229EPI80 | 100% |  | 2012-01-29 | 2012-02-05 |  |  |  | 3 | ENP | 1 |  |  |
| 4229EME110 |  | Material Selection philosophy report-Final | 10d | 2012-03-04 A | 2012-03-15 A | 4229EME80 FS+5d | 100% |  |  |  |  |  |  | 0 | ENP | 1 |  |  |
|  | 3 | **MRQ's / specifications** |  | 2011-09-28 | 2012-12-05 |  |  |  |  |  |  |  |  |  |  |  |  |  |
| 4229EME10 |  | MRQ for cathodic protection | 15d | 2011-09-28 A | 2011-10-20 A | 4229GM10 FS+30d | 100% |  | 2011-09-28 | 2011-10-19 |  |  |  | 4 | ENP | 3 | 18502 | 01 |
| 4229EME60 |  | T.E.R for cathodic protection | 15d | 2011-11-24 A | 2011-12-27 A | 4229PCP20 | 100% |  | 2011-12-04 | 2011-12-22 |  |  |  | 4 | ENP | 3 | 18502 | 09 |
| 4229EME100 |  | MRP for cathodic protection | 5d | 2012-02-26 A | 2012-02-28 A | 4229PCP60 | 100% |  | 2012-03-04 | 2012-03-08 |  |  |  | 4 | ENP | 3 | 18502 | 14 |
| 4229EME170 |  | MRQ for Progressive Cavity Pump | 5d | 2012-03-07 A | 2012-03-13 A |  | 100% |  | 2012-04-29 | 2012-05-03 |  |  |  | 3 | ENP | 3 | 13103 | 01 |
| 4229EME130 |  | Data sheets for corrosion inhibitor pump-Purchase | 3d | 2012-03-25 A | 2012-04-04 A | 4229EPR150 SS | 100% |  | 2012-04-01 | 2012-04-03 |  |  |  | 3 | ENP | 1 |  |  |
| 4229EME140 |  | Data sheets for demulsifier injection pump-Purchase | 5d | 2012-03-25 A | 2012-03-27 A | 4229EPR150 SS | 100% |  | 2012-04-05 | 2012-04-11 |  |  |  | 3 | ENP | 1 |  |  |
| 4229EME150 |  | Data sheets for scale inhibitor -Purchase | 5d | 2012-03-25 A | 2012-03-27 A | 4229EME140 SS | 100% |  | 2012-04-05 | 2012-04-11 |  |  |  | 3 | ENP | 1 |  |  |
| 4229EME160 |  | Specifications for positive displacement pumps | 5d | 2012-03-25 A | 2012-03-27 A | 4229EME130 SS, 4229EME150 SS, 4229EME140 SS | 100% |  | 2012-04-05 | 2012-04-11 |  |  |  | 3 | ENP | 1 |  |  |
| 4229EME120 |  | V.P.R for cathodic protection | 45d | 2012-03-27 A | 2012-05-22 A | 4229PCP90 SS+30d | 100% |  | 2012-04-08 | 2012-06-07 |  |  |  | 3 | ENP | 3 |  |  |
| 4229EME180 |  | T.E.R. for Progressive cavity pump | 30d | 2012-04-29 A | 2012-06-05 | 4229PPC110 | 90% | 3d | 2012-05-02 | 2012-06-12 | 158d | 0d | 2012-06-05 | 3 | ENP | 3 | 13103 | 09 |
| 4229EME190 |  | V.P.R for Progressive Cavity pump | 100d | 2012-07-05 | 2012-12-05 | 4229PPC140 SS |  |  |  |  | 211d |  |  | 3 | ENP | 3 |  |  |
| 4229EME200 |  | MRP for Progressive Cavity pump | 5d | 2012-07-05 | 2012-07-11 | 4229PPC190 |  |  |  |  | 296d | 0d |  | 3 | ENP | 3 | 13103 | 14 |
|  | 8 | **Pressure vessels** |  | 2011-09-25 | 2012-08-02 |  |  |  |  |  |  |  |  |  |  |  |  |  |
|  | 1 | **Drawings /lists** |  |  |  |  |  |  |  |  |  |  |  |  |  |  |  |  |
|  | 2 | **Reports** |  |  |  |  |  |  |  |  |  |  |  |  |  |  |  |  |
|  | 3 | **MRQ's** |  | 2011-09-25 | 2012-08-02 |  |  |  |  |  |  |  |  |  |  |  |  |  |
| 4229EPV10 |  | Issue MRQ for Small Tanks | 5d | 2011-09-25 A | 2011-10-24 A | 4229GM10, 4229EPI40 | 100% |  | 2011-10-27 | 2011-11-02 |  |  |  | 3 | ENP | 3 | 11303 | 01 |
| 4229EPV20 |  | Issue MRQ for Pressure vesseles | 5d | 2011-09-25 A | 2011-11-17 A | 4229GM10 | 100% |  | 2011-11-01 | 2011-11-14 |  |  |  | 3 | ENP | 3 | 11301 | 01 |
| 4229EPV30 |  | T.E.R for Small Tanks | 20d | 2011-11-24 A | 2011-12-29 A | 4229PTA20 | 100% |  | 2011-12-04 | 2011-12-29 |  |  |  | 3 | ENP | 3 | 11303 | 09 |
| 4229EPV40 |  | T.E.R for Pressure Vessels | 20d | 2011-12-15 A | 2012-02-20 A | 4229PVE20 | 100% |  | 2011-12-11 | 2012-01-05 |  |  |  | 3 | ENP | 3 | 11301 | 09 |
| 4229EPV50 |  | MRP for Small Tanks (cancelled) | 5d | 2012-03-03 A | 2012-03-03 A | 4229PTA60 | 100% |  | 2012-03-18 | 2012-03-22 |  |  |  | 3 | ENP | 3 | 11303 | 14 |
| 4229EPV70 |  | V.P.R for Small Tanks (cancelled) | 50d | 2012-03-03 A | 2012-03-03 A | 4229PTA90 SS+30d | 100% |  | 2012-04-29 | 2012-07-05 |  |  |  | 3 | ENP | 3 |  |  |
| 4229EPV60 |  | MRP for Pressure Vessels | 5d | 2012-03-25 A | 2012-03-25 A | 4229PVE60 | 100% |  | 2012-03-25 | 2012-03-29 |  |  |  | 3 | ENP | 3 | 11301 | 14 |
| 4229EPV80 |  | V.P.R for Pressure Vesseles | 40d | 2012-04-09 A | 2012-08-02 | 4229PVE90 SS+30d |  | 40d | 2012-05-06 | 2012-06-28 | 290d | 147d |  | 3 | ENP | 3 |  |  |

| ID | WBS | Activity | Duration | Start | Finish | Predecessors | Complete | Remaining | Planned start | Planned finish | Total float | Free float | Constraint | Expected finish | Work Package | Resp. | Phase-1 | Global Commodity Code | Global Activity Code |
| --- | --- | --- | --- | --- | --- | --- | --- | --- | --- | --- | --- | --- | --- | --- | --- | --- | --- | --- | --- |
|  | 5 | **Electrical** |  | 2011-08-15 | 2012-09-06 |  |  |  |  |  |  |  |  |  |  |  |  |  |  |
|  | 1 | **Drawings /lists** |  | 2011-08-21 | 2012-09-06 |  |  |  |  |  |  |  |  |  |  |  |  |  |  |
| 4229EEL20 |  | Single line diagram -Approval | 5d | 2011-08-21 A | 2011-08-25 A | 4229EME30, 4229EEL50 | 100% |  | 2011-12-11 | 2011-12-15 |  |  |  |  | 3 | ENP | 1 |  |  |
| 4229EEL50 |  | Electrical Load analysis -Design | 5d | 2011-11-02 A | 2011-12-15 A | 4229EME30 FS+15d, 4229EPR40 | 100% |  | 2011-12-07 | 2011-12-13 |  |  |  |  | 3 | ENP | 1 |  |  |
| 4229EEL120 |  | Single line diagram -Design | 8d | 2011-11-20 A | 2011-11-27 A | 4229EEL110 FF, 4229EEL20 FS+5d, 4229EME70, 4229EEL130 FF | 100% |  | 2011-12-27 | 2012-01-05 |  |  |  |  | 3 | ENP | 1 |  |  |
| 4229EEL70 |  | Hazardous area classification layout -IFA | 10d | 2011-11-21 A | 2011-11-29 A | 4229ELP40 | 100% |  | 2011-12-04 | 2011-12-15 |  |  |  |  | 3 | ENP | 1 |  |  |
| 4229EEL80 |  | Electrical layouts IFA | 15d | 2011-11-22 A | 2011-12-08 A | 4229EPI40 | 100% |  | 2011-12-04 | 2011-12-22 |  |  |  |  | 3 | ENP | 1 |  |  |
| 4229EEL160 |  | Hazardous area classification layout -IFD | 10d | 2011-11-27 A | 2012-01-24 A | 4229EPI80 FF+5d | 100% |  | 2012-01-12 | 2012-01-26 |  |  |  |  | 3 | ENP | 1 |  |  |
| 4229EEL100 |  | Electrical cable routing layouts -Approval | 10d | 2011-11-30 A | 2011-12-20 A | 4229EEL80 | 100% |  | 2012-01-11 | 2012-01-24 |  |  | start on 2012-01-11 |  | 3 | ENP | 1 |  |  |
| 4229EEL90 |  | Cable schedule IFA | 5d | 2011-12-04 A | 2011-12-06 A | 4229EEL100 FF | 100% |  | 2011-12-11 | 2011-12-15 |  |  |  |  | 3 | ENP | 1 |  |  |
| 4229EEL190 |  | Electrical cable routing layouts -Design | 10d | 2012-01-01 A | 2012-01-30 A | 4229EPI130, 4229EEL170 FF+5d | 100% |  | 2012-03-18 | 2012-03-29 |  |  |  |  | 3 | ENP | 1 |  |  |
| 4229EEL170 |  | Electrical layouts IFD | 15d | 2012-01-08 A | 2012-01-29 A | 4229EPI80 | 100% |  | 2012-03-04 | 2012-03-22 |  |  |  |  | 3 | ENP | 1 |  |  |
| 4229EEL180 |  | Cable schedule IFD | 5d | 2012-01-19 A | 2012-02-01 A | 4229EEL190 FF, 4229EEL90 FS+5d | 100% |  | 2012-03-25 | 2012-03-29 |  |  |  |  | 3 | ENP | 1 |  |  |
| 4229EEL110 |  | Electrical Load analysis -Final | 5d | 2012-07-08 | 2012-07-12 | 4229EME70, 4229EPR120 |  |  |  |  | 295d | 0d |  |  | 3 | ENP | 1 |  |  |
| 4229EEL220 |  | Interconnection & wiring diagram- Construction | 15d | 2012-07-12 | 2012-08-01 | 4229PSG90 SS+40d, 4229PSU60 SS+40d |  |  |  |  | 281d | 11d |  |  | 3 | ENP | 1 |  |  |
| 4229EEL290 |  | Single line diagram -Construction | 10d | 2012-07-19 | 2012-08-01 | 4229EIN480 SS+18d |  |  |  |  | 291d | 129d |  |  | 3 | ENP | 1 |  |  |
| 4229EEL230 |  | Electrical layouts-Construction | 10d | 2012-07-22 | 2012-08-02 | 4229EPI160 |  |  |  |  | 275d | 5d |  |  | 3 | ENP | 1 |  |  |
| 4229EEL240 |  | Hazardous area classification layout -IFC | 10d | 2012-07-25 | 2012-08-07 | 4229ELP370 |  |  |  |  | 277d | 7d |  |  | 3 | ENP | 1 |  |  |
| 4229EEL260 |  | Electrical cable routing layouts -Construction | 10d | 2012-08-05 | 2012-08-16 | 4229EEL230 FF+5d, 4229EPI190 |  |  |  |  | 270d | 0d |  |  | 3 | ENP | 1 |  |  |
| 4229EEL250 |  | Cable schedule IFC | 5d | 2012-08-12 | 2012-08-16 | 4229EEL180, 4229EEL260 FF |  |  |  |  | 270d | 0d |  |  | 3 | ENP | 1 |  |  |
| 4229EEL270 |  | Electrical installation details -Construction | 10d | 2012-08-26 | 2012-09-06 | 4229EEL260, 4229EEL120, 4229EEL160, 4229EEL240, 4229EEL80, 4229EEL190, 4229EEL20, 4229EEL250, 4229EEL110, 4229EEL170, 4229EEL230, 4229EEL90, 4229EEL220, 4229EEL70, 4229EEL180, 4229EEL100, 4229EEL50 |  |  |  |  | 270d | 108d |  |  | 3 | ENP | 1 |  |  |
|  | 2 | **Reports** |  |  |  |  |  |  |  |  |  |  |  |  |  |  |  |  |  |
|  | 3 | **MRQ's** |  | 2011-08-15 | 2012-09-06 |  |  |  |  |  |  |  |  |  |  |  |  |  |  |
| 4229EEL10 |  | Issue MRQ for solar power unit | 7d | 2011-08-15 A | 2011-08-23 A | 4229GM10 | 100% |  |  |  |  |  |  |  | 3 | ENP | 3 | 51018 | 01 |
| 4229EEL330 |  | Issue MRQ for solar power unit | 7d | 2011-08-15 A | 2011-08-23 A |  | 100% |  |  |  |  |  |  |  | 3 | ENP | 3 | 51018 | 01 |
| 4229EEL30 |  | Issue MRQ for Navigation aids | 3d | 2011-09-15 A | 2011-09-19 A | 4229GM10 FS+21d | 100% |  |  |  |  |  |  |  | 3 | ENP | 3 | 51010 | 01 |
| 4229EEL40 |  | T.E.R for solar power unit | 15d | 2011-10-13 A | 2012-01-31 A | 4229PSU20 | 100% |  | 2011-10-16 | 2011-11-03 |  |  |  |  | 3 | ENP | 3 | 51018 | 09 |
| 4229EEL60 |  | T.E.R for Navigation aids | 15d | 2011-10-17 A | 2011-12-07 A | 4229PNA20 | 100% |  | 2011-10-17 | 2011-11-13 |  |  |  |  | 3 | ENP | 3 | 51010 | 09 |
| 4229EEL140 |  | Issue MRQ for Electrical bulk | 8d | 2011-12-18 A | 2011-12-27 A | 4229EEL80, 4229GM10 FS+1d, 4229EEL90 | 100% |  |  |  |  |  |  |  | 3 | ENP | 3 | 50002 | 01 |
| 4229EEL150 |  | MRP for Navigation aids | 5d | 2012-01-12 A | 2012-01-18 A | 4229PNA60 | 100% |  | 2012-01-16 | 2012-01-22 |  |  |  |  | 3 | ENP | 3 | 51010 | 14 |
| 4229EEL200 |  | T.E.R for Electrical bulk | 15d | 2012-02-02 A | 2012-06-03 | 4229PEB20 | 93% | 1d | 2012-03-05 | 2012-03-25 | 205d | 0d |  | 2012-06-03 | 3 | ENP | 3 | 50002 | 09 |
| 4229EEL130 |  | MRP for solar power unit | 5d | 2012-03-08 A | 2012-03-28 A | 4229PSU60 | 100% |  | 2012-03-08 | 2012-03-14 |  |  |  |  | 3 | ENP | 3 | 51018 | 14 |
| 4229EEL280 |  | V.P.R for solar power unit | 70d | 2012-04-05 A | 2012-09-06 | 4229PSU90 SS+30d | 14% | 60d | 2012-05-06 | 2012-08-09 | 270d | 127d |  |  | 3 | ENP | 3 |  |  |
| 4229EEL300 |  | V.P.R for Navigation aids | 13d | 2012-04-26 A | 2012-07-26 | 4229PNA90 SS+45d |  | 35d | 2012-05-06 | 2012-05-22 | 295d | 133d |  |  | 3 | ENP | 3 |  |  |
| 4229EEL210 |  | MRP for Electrical bulk | 5d | 2012-07-02 | 2012-07-08 | 4229PEB60 |  |  |  |  | 205d | 0d |  |  | 3 | ENP | 3 | 50002 | 14 |

| ID | WBS | Activity | Duration | Start | Finish | Predecessors | Complete | Remaining | Planned start | Planned finish | Total float | Free float | Constraint | Expected finish | Work Package | Resp. | Phase-1 |
| --- | --- | --- | --- | --- | --- | --- | --- | --- | --- | --- | --- | --- | --- | --- | --- | --- | --- |
|  | 6 | **Instrument** |  | 2011-08-15 | 2012-12-05 |  |  |  |  |  |  |  |  |  |  |  |  |
|  | 1 | **Drawings /lists** |  | 2011-09-29 | 2012-09-06 |  |  |  |  |  |  |  |  |  |  |  |  |
| 4229EIN70 |  | Instrument I/O list issued for approval | 2d | 2011-09-29 A | 2011-10-09 A | 4229EPR40 | 100% |  | 2011-10-13 | 2011-10-16 |  |  |  |  | 3 | ENP | 1 |
| 4229EIN150 |  | Instrument I/O list issued for design | 2d | 2011-10-23 A | 2011-12-16 A | 4229EIN130 | 100% |  | 2011-12-15 | 2011-12-18 |  |  |  |  | 3 | ENP | 1 |
| 4229EIN60 |  | Instrument index -Approval | 5d | 2011-10-26 A | 2011-11-20 A | 4229EPR40 | 100% |  | 2011-10-30 | 2011-11-03 |  |  |  |  | 3 | ENP | 1 |
| 4229EIN120 |  | Instrument layouts -Approval | 15d | 2011-11-22 A | 2011-12-15 A | 4229EPI40 | 100% |  | 2011-12-04 | 2011-12-22 |  |  |  |  | 3 | ENP | 1 |
| 4229EIN130 |  | Instrument index issued for design | 5d | 2011-11-28 A | 2011-12-13 A | 4229EPR120 | 100% |  | 2011-12-08 | 2011-12-14 |  |  |  |  | 3 | ENP | 1 |
| 4229EIN140 |  | Instrument cable / tubing routing layouts IFA | 10d | 2011-12-05 A | 2012-01-26 A | 4229EEL100 SS+7d | 100% |  | 2011-12-11 | 2011-12-22 |  |  |  |  | 3 | ENP | 1 |
| 4229EIN520 |  | Instrument wiring diagram-Approval | 10d | 2011-12-09 A | 2011-12-14 A | 4229EPI100 | 100% |  | 2012-01-11 | 2012-01-24 |  |  |  |  | 3 | ENP | 1 |
| 4229EIN190 |  | Instrument hook-ups issued for approval | 10d | 2011-12-12 A | 2012-01-02 A | 4229EPI40 FS+15d | 100% |  | 2011-12-12 | 2011-12-25 |  |  |  |  | 3 | ENP | 1 |
| 4229EIN100 |  | Functional loop diagram-Approval | 15d | 2012-01-05 A | 2012-01-11 A | 4229EIN520, 4229EIN200, 4229EPR90 | 100% |  | 2012-01-17 | 2012-02-07 |  |  |  |  | 3 | ENP | 1 |
| 4229EIN200 |  | Instrument cable / tubing schedule for approval | 5d | 2012-01-05 A | 2012-01-11 A | 4229EIN520, 4229EIN140 FF+5d | 100% |  | 2012-01-09 | 2012-01-15 |  |  | start on or after 2012-01-09 |  | 3 | ENP | 1 |
| 4229EIN310 |  | Instrument hook-ups issued for design | 10d | 2012-01-10 A | 2012-02-02 A | 4229EPI80 FS+15d | 100% |  | 2012-03-04 | 2012-03-15 |  |  |  |  | 3 | ENP | 1 |
| 4229EIN240 |  | Functional loop diagram-Design | 6d | 2012-01-15 A | 2012-02-27 A | 4229EPR130 | 100% |  | 2012-03-04 | 2012-03-11 |  |  |  |  | 3 | ENP | 1 |
| 4229EIN530 |  | Instrument wiring diagram-Design | 10d | 2012-01-15 A | 2012-01-24 A | 4229EPI130 | 100% |  | 2012-02-13 | 2012-02-26 |  |  |  |  | 3 | ENP | 1 |
| 4229EIN300 |  | Instrument cable / tubing schedule for design | 5d | 2012-01-24 A | 2012-01-24 A | 4229EIN280 FF+5d | 100% |  | 2012-03-04 | 2012-03-08 |  |  |  |  | 3 | ENP | 1 |
| 4229EIN270 |  | Instrument layouts -Design | 0d | 2012-01-29 A | 2012-02-16 A | 4229EPI80 | 100% |  | 2012-01-29 | 2012-01-29 |  |  |  |  | 3 | ENP | 1 |
| 4229EIN570 |  | Instrument loop Diagram-Approval | 1d | 2012-02-22 A | 2012-02-26 A | 4229EIN100 | 100% |  | 2012-03-04 | 2012-03-04 |  |  |  |  | 3 | ENP | 1 |
| 4229EIN280 |  | Instrument cable / tubing routing layouts IFD | 8d | 2012-02-29 A | 2012-02-29 A | 4229EPI130 FF | 100% |  | 2012-03-04 | 2012-03-13 |  |  |  |  | 3 | ENP | 1 |
| 4229EIN580 |  | Instrument loop diagram-Design | 10d | 2012-03-28 A | 2012-06-04 | 4229EIN570 FS+5d | 80% | 2d | 2012-04-01 | 2012-04-12 | 332d | 0d |  | 2012-06-04 | 3 | ENP | 1 |
| 4229EIN400 |  | Instrument index issued for construction | 5d | 2012-07-01 | 2012-07-05 | 4229EPR180 |  |  |  |  | 305d | 0d |  |  | 3 | ENP | 1 |
| 4229EIN410 |  | Instrument I/O list issued for construction | 5d | 2012-07-08 | 2012-07-12 | 4229EIN400 |  |  |  |  | 305d | 143d |  |  | 3 | ENP | 1 |
| 4229EIN420 |  | Functional loop diagram-Construction | 15d | 2012-07-11 | 2012-07-31 | 4229EPR200 |  |  |  |  | 291d | 0d |  |  | 3 | ENP | 1 |
| 4229EIN440 |  | Instrument hook-ups issued for construction | 10d | 2012-07-22 | 2012-08-02 | 4229EPI160 |  |  |  |  | 290d | 128d |  |  | 3 | ENP | 1 |
| 4229EIN450 |  | Instrument layouts -Construction | 10d | 2012-07-22 | 2012-08-02 | 4229EPI160 |  |  |  |  | 275d | 0d |  |  | 3 | ENP | 1 |
| 4229EIN460 |  | Instrument cable / tubing routing layouts IFC | 10d | 2012-07-29 | 2012-08-09 | 4229EPI190 FF, 4229EIN450 FF+5d |  |  |  |  | 275d | 0d |  |  | 3 | ENP | 1 |
| 4229EIN590 |  | Instrument loop diagram-Construction | 1d | 2012-08-01 | 2012-08-01 | 4229EIN420, 4229EIN580 |  |  |  |  | 291d | 129d |  |  | 3 | ENP | 1 |
| 4229EIN390 |  | Safeguard system schematic diagram- Construction | 10d | 2012-08-12 | 2012-08-30 | 4229PSG90 SS+70d |  |  |  |  | 275d | 113d |  |  | 3 | ENP | 1 |
| 4229EIN470 |  | Instrument cable / tubing schedule for construction | 5d | 2012-08-12 | 2012-08-16 | 4229EIN460 FF+5d |  |  |  |  | 280d | 118d |  |  | 3 | ENP | 1 |
| 4229EIN430 |  | Instrument wiring diagram-Construction | 10d | 2012-08-26 | 2012-09-06 | 4229PCV90 SS+60d, 4229PMP90 SS+60d, 4229POV90 SS+60d, 4229PRV90 SS+60d |  |  |  |  | 270d | 108d |  |  | 3 | ENP | 1 |

| ID | WBS | Activity | Duration | Start | Finish | Predecessors | Complete | Remaining | Planned start | Planned finish | Total float | Free float | Constraint | Expected finish | Global Commodity Code | Global Activity Code | Work Package | Resp. | Phase-1 |
| --- | --- | --- | --- | --- | --- | --- | --- | --- | --- | --- | --- | --- | --- | --- | --- | --- | --- | --- | --- |
|  | 2 | **Reports** |  |  |  |  |  |  |  |  |  |  |  |  |  |  |  |  |  |
|  | 3 | **MRQ's** |  | 2011-08-15 | 2012-12-05 |  |  |  |  |  |  |  |  |  |  |  |  |  |  |
| 4229EIN10 |  | Issue MRQ for SGS | 8d | 2011-08-15 A | 2011-08-24 A | 4229GM10 | 100% |  |  |  |  |  |  |  | 25211 | 01 | 3 | ENP | 3 |
| 4229EIN80 |  | T.E.R for SGS | 25d | 2011-09-28 A | 2012-01-09 A | 4229PSG20 | 100% |  | 2011-09-28 | 2011-11-02 |  |  |  |  | 25211 | 09 | 3 | ENP | 3 |
| 4229EIN20 |  | Issue MRQ for MPFM | 5d | 2011-09-29 A | 2011-10-04 A | 4229GM10 FS+1d, 4229EPR20 | 100% |  | 2011-09-29 | 2011-10-05 |  |  |  |  | 22106 | 01 | 3 | ENP | 3 |
| 4229EIN30 |  | Issue MRQ for Pressure regulator valves | 3d | 2011-10-03 A | 2011-10-09 A | 4229GM10 FS+1d, 4229EIN20 FF+0.1d, 4229EPR20 | 100% |  |  |  |  |  |  |  | 21204 | 01 | 3 | ENP | 3 |
| 4229EIN40 |  | Issue MRQ for Choke valves | 5d | 2011-10-10 A | 2011-11-24 A | 4229GM10 FS+1d, 4229EIN30 FS+1d | 100% |  | 2011-10-10 | 2011-10-17 |  |  |  |  | 23406 | 01 | 3 | ENP | 3 |
| 4229EIN50 |  | Issue MRQ for SDV | 5d | 2011-10-12 A | 2011-10-26 A | 4229EIN40 FS-3d | 100% |  | 2011-10-12 | 2011-10-19 |  |  |  |  | 23402 | 01 | 3 | ENP | 3 |
| 4229EIN110 |  | T.E.R for MPFM | 20d | 2011-11-14 A | 2011-12-21 A | 4229PMP20 | 100% |  | 2011-12-04 | 2011-12-29 |  |  |  |  | 22106 | 09 | 3 | ENP | 3 |
| 4229EIN90 |  | Issue MRQ for field Instrument | 5d | 2011-11-16 A | 2011-12-13 A | 4229EPR40 FS+10d, 4229GM10 FS+1d | 100% |  | 2011-12-04 | 2011-12-08 |  |  |  |  | 21001 | 01 | 3 | ENP | 3 |
| 4229EIN220 |  | T.E.R for SDV | 20d | 2011-11-28 A | 2012-02-01 A | 4229POV20 | 100% |  | 2011-12-04 | 2011-12-29 |  |  |  |  | 23402 | 09 | 3 | ENP | 3 |
| 4229EIN170 |  | T.E.R for choke valves | 20d | 2011-12-27 A | 2012-04-03 A | 4229PCV20 | 100% |  | 2012-01-01 | 2012-01-29 |  |  |  |  | 23406 | 09 | 3 | ENP | 3 |
| 4229EIN180 |  | Issue MRQ for Instrument mechanical bulk | 10d | 2012-01-08 A | 2012-02-19 A | 4229EIN140, 4229GM10 FS+1d | 100% |  | 2012-01-08 | 2012-01-19 |  |  |  |  | 29101 | 01 | 3 | ENP | 3 |
| 4229EIN230 |  | Issue MRQ for Instrument electrical bulk | 10d | 2012-01-16 A | 2012-02-27 A | 4229GM10 FS+1d, 4229EIN280 FF-10d | 100% |  | 2012-01-16 | 2012-01-30 |  |  | start on or after 2012-01-16 |  | 29201 | 01 | 3 | ENP | 3 |
| 4229EIN250 |  | T.E.R for field Instrument | 15d | 2012-01-17 A | 2012-05-02 A | 4229PFI20 | 100% |  | 2012-01-17 | 2012-02-07 |  |  | start on or after 2012-01-17 |  | 21001 | 09 | 3 | ENP | 3 |
| 4229EIN160 |  | T.E.R for Pressure regulator valves | 15d | 2012-02-02 A | 2012-04-03 A | 4229PRV20 | 100% |  | 2012-03-08 | 2012-03-28 |  |  |  |  | 21204 | 09 | 3 | ENP | 3 |
| 4229EIN260 |  | MRP for MPFM | 5d | 2012-02-09 A | 2012-02-20 A | 4229PMP60 | 100% |  | 2012-03-04 | 2012-03-08 |  |  |  |  | 22106 | 14 | 3 | ENP | 3 |
| 4229EIN490 |  | V.P.R for MPFM | 90d | 2012-03-08 A | 2012-10-11 | 4229PMP90 SS+45d |  | 90d | 2012-05-06 | 2012-09-13 | 245d | 102d |  |  |  |  | 3 | ENP | 3 |
| 4229EIN210 |  | MRP for SGS | 5d | 2012-03-08 A | 2012-05-08 A | 4229PSG60 | 100% |  | 2012-03-08 | 2012-03-14 |  |  |  |  | 25211 | 14 | 3 | ENP | 3 |
| 4229EIN360 |  | T.E.R for Instrument electrical bulk | 15d | 2012-03-26 A | 2012-06-03 | 4229PIB1010 | 93% | 1d | 2012-04-25 | 2012-05-15 | 216d | 0d |  | 2012-06-03 | 29201 | 09 | 3 | ENP | 3 |
| 4229EIN340 |  | T.E.R for Instrument Mechanical bulk | 15d | 2012-03-27 A | 2012-03-27 A | 4229PIB20 | 100% |  | 2012-04-01 | 2012-04-19 |  |  |  |  | 29101 | 09 | 3 | ENP | 3 |
| 4229EIN330 |  | MRP for SDV | 5d | 2012-04-22 A | 2012-04-26 A | 4229POV60 | 100% |  | 2012-04-29 | 2012-05-03 |  |  |  |  | 23402 | 14 | 3 | ENP | 3 |
| 4229EPR300 |  | V.P.R for Shutdown valves | 85d | 2012-04-29 A | 2012-10-30 | 4229POV90 SS+45d |  | 85d | 2012-06-20 | 2012-10-30 | 237d | 75d |  |  |  |  | 3 | ENP | 3 |
| 4229EIN600 |  | Additional shutdown valves MRQ | 10d | 2012-04-29 A | 2012-05-06 A |  | 100% |  | 2012-04-29 | 2012-05-10 |  |  |  |  | 23409 | 01 | 3 | ENP | 3 |
| 4229EIN480 |  | V.P.R for safeguard system | 80d | 2012-05-10 A | 2012-10-15 | 4229PSG90 SS+45d | 25% | 60d | 2012-06-25 | 2012-10-28 | 243d | 0d |  |  |  |  | 3 | ENP | 3 |
| 4229EIN290 |  | MRP for Choke valves | 5d | 2012-05-27 A | 2012-06-04 | 4229PCV60 | 60% | 2d | 2012-06-03 | 2012-06-07 | 213d | 0d |  |  | 23406 | 14 | 3 | ENP | 3 |
| 4229EIN320 |  | MRP for pressure regulator valves | 5d | 2012-05-27 A | 2012-06-05 | 4229PRV60 | 40% | 3d | 2012-06-03 | 2012-06-07 | 151d | 0d |  |  | 21204 | 14 | 3 | ENP | 3 |
| 4229EIN610 |  | Additional shutdown valves T.E.R | 14d | 2012-05-27 A | 2012-06-20 | 4229PFV110 |  | 14d | 2012-05-31 | 2012-06-19 | 160d | 0d |  |  | 23409 | 09 | 3 | ENP | 3 |
| 4229EIN370 |  | MRP for Instrument Mechanical bulk | 5d | 2012-05-31 A | 2012-05-31 A | 4229PIB60 | 100% |  | 2012-05-27 | 2012-05-31 |  |  |  |  | 29101 | 14 | 3 | ENP | 3 |
| 4229EIN550 |  | V.P.R for Instrument Mechanical bulk | 30d | 2012-05-31 A | 2012-05-31 A | 4229PIB90 SS+45d | 100% |  | 2012-07-22 | 2012-09-06 |  |  |  |  |  |  | 3 | ENP | 3 |
| 4229EIN350 |  | MRP for field Instrument | 5d | 2012-06-24 | 2012-06-28 | 4229PFI60 |  |  |  |  | 197d | 0d |  |  | 21001 | 14 | 3 | ENP | 3 |
| 4229EIN380 |  | MRP for Instrument electrical bulk | 5d | 2012-07-02 | 2012-07-08 | 4229PIB1050 |  |  |  |  | 216d | 0d |  |  | 29201 | 14 | 3 | ENP | 3 |
| 4229EIN510 |  | V.P.R for Pressure regulator valves | 90d | 2012-07-08 | 2012-11-22 | 4229PRV90 SS+30d |  |  |  |  | 220d | 77d |  |  |  |  | 3 | ENP | 3 |
| 4229EIN620 |  | Additional shutdown valves MRP | 5d | 2012-07-18 | 2012-07-24 | 4229PFV160 |  |  |  |  | 290d | 0d |  |  | 23409 | 14 | 3 | ENP | 3 |
| 4229EIN500 |  | V.P.R for choke valves | 90d | 2012-07-19 | 2012-12-05 | 4229PCV90 SS+30d |  |  |  |  | 211d | 68d |  |  |  |  | 3 | ENP | 3 |
| 4229EIN540 |  | V.P.R for field instruments | 35d | 2012-09-05 | 2012-10-30 | 4229PFI90 SS+45d |  |  |  |  | 237d | 75d |  |  |  |  | 3 | ENP | 3 |
| 4229EIN560 |  | V.P.R for Instrument Electrical bulk | 20d | 2012-09-13 | 2012-10-10 | 4229PIB1080 SS+45d |  |  |  |  | 246d | 84d |  |  |  |  | 3 | ENP | 3 |

| ID | WBS | Activity | Duration | Start | Finish | Predecessors | Complete | Remaining | Planned start | Planned finish | Total float | Free float | Constraint | Expected finish | Work Package | Resp. | Phase-1 | Global Commodity Code | Global Activity Code |
| --- | --- | --- | --- | --- | --- | --- | --- | --- | --- | --- | --- | --- | --- | --- | --- | --- | --- | --- | --- |
|  | 9 | **Telecommunication** |  | 2011-10-13 | 2013-01-03 |  |  |  |  |  |  |  |  |  |  |  |  |  |  |
|  | 1 | **Drawings /lists** |  | 2011-12-05 | 2012-08-09 |  |  |  |  |  |  |  |  |  |  |  |  |  |  |
| 4229ETE100 |  | Telecommunication equipment layout IFA | 12d | 2011-12-05 A | 2011-12-08 A | 4229EPI40 | 100% |  | 2011-12-04 | 2011-12-19 |  |  |  |  | 3 | ENP | 1 |  |  |
| 4229ETE130 |  | Telecommunication cable routing IFA | 10d | 2011-12-05 A | 2012-01-19 A | 4229EIN140 SS | 100% |  | 2012-01-01 | 2012-01-12 |  |  |  |  | 3 | ENP | 1 |  |  |
| 4229ETE140 |  | Telecommunication cable routing IFD | 10d | 2012-02-01 A | 2012-02-19 A | 4229EIN280 SS | 100% |  | 2012-03-04 | 2012-03-15 |  |  |  |  | 3 | ENP | 1 |  |  |
| 4229ETE110 |  | Telecommunication equipment layout IFD (Expected to be cancelled) | 3d | 2012-06-03 | 2012-06-05 | 4229EPI80 FS+90d, A1180 |  |  |  |  | 317d | 27d |  |  | 3 | ENP | 1 |  |  |
| 4229ETE120 |  | Telecommunication equipment layout IFC (Expected to be cancelled) | 10d | 2012-07-22 | 2012-08-02 | 4229EPI160, 4229ETE110 FS+5d |  |  |  |  | 290d |  |  |  | 3 | ENP | 1 |  |  |
| 4229ETE150 |  | Telecommunication cable routing IFC | 10d | 2012-07-29 | 2012-08-09 | 4229EIN460 SS |  |  |  |  | 285d | 123d |  |  | 3 | ENP | 1 |  |  |
|  | 2 | **Reports** |  | 2011-10-13 | 2011-12-04 |  |  |  |  |  |  |  |  |  |  |  |  |  |  |
| 4229ETE10 |  | Telecommunication Philosophy IFA | 10d | 2011-10-13 A | 2011-10-26 A | 4229GM10 FS+40d | 100% |  |  |  |  |  |  |  | 3 | ENP | 1 |  |  |
| 4229ETE20 |  | Final Telecommunication Philosophy | 8d | 2011-11-28 A | 2011-12-04 A | 4229ETE10 FS+10d | 100% |  | 2011-12-04 | 2011-12-13 |  |  |  |  | 0 | ENP | 1 |  |  |
|  | 3 | **Specifications /MRQ's** |  | 2011-10-17 | 2013-01-03 |  |  |  |  |  |  |  |  |  |  |  |  |  |  |
| 4229ETE30 |  | Point To Point VHF Radio System specification | 9d | 2011-10-17 A | 2011-11-17 A | 4229EIN210 FF-3d, 4229ETE10 | 100% |  | 2011-12-21 | 2012-01-02 |  |  |  |  | 0 | ENP | 1 |  |  |
| 4229ETE40 |  | Radar system specification IFA | 20d | 2011-10-17 A | 2011-11-17 A | 4229GM140 | 100% |  | 2011-10-17 | 2011-11-20 |  |  |  |  | 3 | ENP | 1 |  |  |
| 4229ETE50 |  | Radar system specification IFD | 10d | 2011-11-21 A | 2011-11-30 A | 4229ETE40 FS+5d, 4229ETE80 SS+1d | 100% |  | 2011-12-04 | 2011-12-15 |  |  |  |  | 3 | ENP | 1 |  |  |
| 4229ETE70 |  | MRQ for Radar System IFA | 8d | 2011-11-21 A | 2011-11-30 A | 4229ETE40 FS+5d | 100% |  | 2011-12-11 | 2011-12-20 |  |  |  |  | 3 | ENP | 3 |  |  |
| 4229ETE80 |  | MRQ for Radar System IFI | 4d | 2011-11-21 A | 2011-11-30 A | 4229ETE70 FS+4d | 100% |  | 2011-12-27 | 2012-01-01 |  |  |  |  | 3 | ENP | 3 | 28601 | 01 |
| 4229ETE170 |  | T.E.R for Radar System | 23d | 2012-07-03 | 2012-08-02 | 4229PRS20 |  |  |  |  | 0d |  | start on 2012-07-03 |  | 3 | ENP | 3 | 28601 | 09 |
| 4229ETE60 |  | Radar system specification IFP | 5d | 2012-09-05 | 2012-09-11 | 4229ETE90 FF |  |  |  |  | 267d |  |  |  | 3 | ENP | 1 |  |  |
| 4229ETE90 |  | MRP for Radar System | 5d | 2012-09-05 | 2012-09-11 | 4229PRS60 |  |  |  |  | 174d | 0d |  |  | 3 | ENP | 3 | 28601 | 14 |
| 4229ETE160 |  | V.P.R for Radar System | 50d | 2012-10-28 | 2013-01-03 | 4229PRS90 SS+30d |  |  |  |  | 190d | 28d |  |  | 3 | ENP | 3 |  |  |
|  | 4 | **Offshore** |  | 2011-10-19 | 2012-09-20 |  |  |  |  |  |  |  |  |  |  |  |  |  |  |
|  | 1 | **Drawings / lists** |  | 2011-10-19 | 2012-09-06 |  |  |  |  |  |  |  |  |  |  |  |  |  |  |
| 4229EOF10 |  | Jacket primary steel Drawings-Approval | 25d | 2011-10-19 A | 2011-11-22 A | 4229EPI40 FF, 4229GM10 FS+44d | 100% |  | 2011-10-19 | 2011-11-29 |  |  |  |  | 1 | ENP | 1 |  |  |
| 4229EOF120 |  | General drawings-Approval | 25d | 2011-10-19 A | 2011-11-22 A | 4229EOF10 SS | 100% |  | 2011-10-19 | 2011-11-29 |  |  |  |  | 0 | ENP | 1 |  |  |
| 4229EOF130 |  | Deck primary steel Drawings- Approval | 20d | 2011-11-22 A | 2011-12-29 A | 4229EPI40 | 100% |  | 2011-12-04 | 2011-12-29 |  |  |  |  | 2 | ENP | 1 |  |  |
| 4229EOF170 |  | Jacket secondary steel & piles Drawings-Approval | 15d | 2011-11-23 A | 2011-12-15 A | 4229EOF10 | 100% |  | 2011-12-04 | 2011-12-22 |  |  |  |  | 1 | ENP | 1 |  |  |
| 4229EOF270 |  | Genral Drawings- Construction | 20d | 2011-12-07 A | 2011-12-29 A | 4229EOF260 SS, 4229EOF120 FS+5d | 100% |  | 2012-01-01 | 2012-01-29 |  |  |  |  | 0 | ENP | 1 |  |  |
| 4229EOF200 |  | Jacket appartenues Drawings-Approval | 20d | 2011-12-14 A | 2011-12-25 A | 4229EOF170, 4229EPL240 FF+5d, 4229EPL230 FF+5d | 100% |  | 2011-12-14 | 2012-01-10 |  |  |  |  | 1 | ENP | 1 |  |  |
| 4229EOF230 |  | Deck secondary steel Drawings- Approval | 20d | 2011-12-14 A | 2012-01-08 A | 4229EOF130 | 100% |  | 2011-12-14 | 2012-01-10 |  |  |  |  | 2 | ENP | 1 |  |  |
| 4229EOF260 |  | Jacket primary steel Drawings- Construction | 20d | 2011-12-15 A | 2011-12-29 A | 4229EOF10 FS+10d | 100% |  | 2012-01-01 | 2012-01-29 |  |  |  |  | 1 | ENP | 1 |  |  |
| 4229EOF290 |  | Stairs drawings-Approval | 10d | 2012-01-01 A | 2012-02-20 A | 4229EOF200 | 100% |  | 2012-01-01 | 2012-01-12 |  |  |  |  | 3 | ENP | 1 |  |  |
| 4229EOF310 |  | Grating & handrails drawings-Approval | 15d | 2012-01-04 A | 2012-01-08 A | 4229EOF130, 4229EOF230 | 100% |  | 2012-01-30 | 2012-02-19 |  |  |  |  | 1 | ENP | 1 |  |  |
| 4229EOF410 |  | Grating & handrails drawings-Construction | 15d | 2012-01-10 A | 2012-01-19 A | 4229EOF310 FS+5d | 100% |  | 2012-02-27 | 2012-03-18 |  |  |  |  | 1 | ENP | 1 |  |  |
| 4229EOF350 |  | Jacket secondary steel & piles Drawings- Construction | 15d | 2012-01-15 A | 2012-02-28 A | 4229EOF260, 4229EOF170 FS+10d | 100% |  | 2012-01-29 | 2012-02-16 |  |  |  |  | 1 | ENP | 1 |  |  |
| 4229EOF280 |  | Cable trays supports -Approval | 12d | 2012-01-29 A | 2012-06-20 | 4229ELP110, 4229EEL100, 4229EEL190 FS+30d, 4229EIN140, 4229EIN280 FS+30d |  | 14d | 2012-05-15 | 2012-05-30 | 306d | 0d | start on 2012-05-15 | 2012-06-20 | 3 | ENP | 1 |  |  |
| 4229EOF550 |  | Deck primary steel Drawings- Construction | 15d | 2012-05-20 A | 2012-08-09 | 4229EPI160, 4229EOF130 FS+7d, 4229EOF130 FF, 4229EOF10 |  | 15d | 2012-06-18 | 2012-07-08 | 260d | 0d |  |  | 2 | ENP | 1 |  |  |
| 4229EOF560 |  | Deck secondary steel Drawings- Construction | 15d | 2012-05-20 A | 2012-09-06 | 4229EOF550 |  | 15d | 2012-07-09 | 2012-07-29 | 260d | 0d |  |  | 2 | ENP | 1 |  |  |
| 4229EOF520 |  | Jacket Appurtenances Drawings-Construction | 14d | 2012-06-03 | 2012-06-20 | 4229EPL420 FF+5d, 4229EPL430 FF+5d, 4229EOF350 |  |  |  |  | 321d | 0d |  | 2012-06-20 | 1 | ENP | 1 |  |  |
| 4229EOF390 |  | Stairs drawings-Construction | 10d | 2012-07-22 | 2012-08-02 | 4229EPI160, 4229EOF290 FS+5d |  |  |  |  | 290d | 128d |  |  | 3 | ENP | 1 |  |  |
| 4229EOF600 |  | Equipment fixation deatils-Construction | 10d | 2012-07-25 | 2012-08-07 | 4229PSG90 SS+53d, 4229EPI210 SS+42d, 4229EME120 SS+20d, 4229EPR250 SS+40d, 4229EPR240 SS+20d |  |  |  |  | 287d | 125d |  |  | 3 | ENP | 1 |  |  |
| 4229EOF360 |  | Piping supports -Approval | 10d | 2012-07-30 | 2012-08-12 | 4229EPI130 FS+60d, 4229EPI200 |  |  |  |  | 279d | 0d |  |  | 3 | ENP | 1 |  |  |
| 4229EOF580 |  | Piping supports -Construction | 5d | 2012-08-13 | 2012-08-26 | 4229EOF360, 4229EPI190 |  |  |  |  | 279d | 117d |  |  | 3 | ENP | 1 |  |  |
| 4229EOF590 |  | Cable trays supports -Construction | 10d | 2012-08-26 | 2012-09-06 | 4229EOF280 FS+5d, 4229ELP390, 4229EEL260, 4229EIN460 |  |  |  |  | 270d | 108d |  |  | 3 | ENP | 1 |  |  |

| ID | WBS | Activity | Duration | Start | Finish | Predecessors | Complete | Remaining | Planned start | Planned finish | Total float | Free float | Constraint | Expected finish | Work Package | Resp. | Phase-1 |
| --- | --- | --- | --- | --- | --- | --- | --- | --- | --- | --- | --- | --- | --- | --- | --- | --- | --- |
|  | 2 | **Reports** |  | 2011-10-19 | 2012-09-20 |  |  |  |  |  |  |  |  |  |  |  |  |
| 4229EOF100 |  | Jacket on-bottom stability report-Approval | 62d | 2011-10-19 A | 2012-01-31 A | 4229EOF70 SS | 100% |  | 2011-10-19 | 2012-01-19 |  |  |  |  | 1 | ENP | 1 |
| 4229EOF110 |  | Pile foundation design report-Approval | 81d | 2011-10-19 A | 2012-03-14 A | 4229EOF100 SS | 100% |  | 2011-10-19 | 2012-02-16 |  |  |  |  | 1 | ENP | 1 |
| 4229EOF20 |  | In-place analysis design report-Approval | 72d | 2011-10-19 A | 2012-02-16 A | 4229EOF10 SS | 100% |  | 2011-10-19 | 2012-02-05 |  |  |  |  | 1 | ENP | 1 |
| 4229EOF30 |  | Earthquake analysis design report-Approval | 72d | 2011-10-19 A | 2012-02-28 A | 4229EOF20 SS | 100% |  | 2011-10-19 | 2012-02-05 |  |  |  |  | 1 | ENP | 1 |
| 4229EOF40 |  | Fatigue analysis design report-Approval | 77d | 2011-10-19 A | 2012-02-09 A | 4229EOF20 SS | 100% |  | 2011-10-19 | 2012-02-12 |  |  |  |  | 1 | ENP | 1 |
| 4229EOF50 |  | Boat impact design analysis report-Approval | 77d | 2011-10-19 A | 2012-02-26 A | 4229EOF40 SS | 100% |  | 2011-10-19 | 2012-02-12 |  |  |  |  | 1 | ENP | 1 |
| 4229EOF60 |  | Jacket loadout analysis design report-Approval | 52d | 2011-10-19 A | 2012-01-22 A | 4229EOF10 SS | 100% |  | 2011-10-19 | 2012-01-05 |  |  |  |  | 1 | ENP | 1 |
| 4229EOF70 |  | Jacket transportation analysis design report-Approval | 52d | 2011-10-19 A | 2012-01-22 A | 4229EOF60 SS | 100% |  | 2011-10-19 | 2012-01-05 |  |  |  |  | 1 | ENP | 1 |
| 4229EOF80 |  | Jacket lifting analysis design report-Approval | 52d | 2011-10-19 A | 2012-01-05 A | 4229EOF70 SS | 100% |  |  |  |  |  |  |  | 1 | ENP | 1 |
| 4229EOF90 |  | Jacket floatation & upending analysis report-Approval | 62d | 2011-10-19 A | 2012-01-31 A | 4229EOF60 SS | 100% |  | 2011-10-19 | 2012-01-19 |  |  |  |  | 1 | ENP | 1 |
| 4229EOF150 |  | Deck transportation analysis report-Approval | 70d | 2011-10-27 A | 2012-02-16 A | 4229EOF130 SS | 100% |  | 2011-10-27 | 2012-02-09 |  |  |  |  | 2 | ENP | 1 |
| 4229EOF160 |  | Deck lifting analysis design report-Approval | 70d | 2011-10-27 A | 2012-03-08 A | 4229EOF130 SS | 100% |  | 2011-10-27 | 2012-02-09 |  |  |  |  | 2 | ENP | 1 |
| 4229EOF300 |  | Topside weight control report- Approval | 8d | 2011-11-22 A | 2012-01-31 A | 4229EOF130, 4229EOF230 | 100% |  | 2012-01-18 | 2012-01-30 |  |  |  |  | 3 | ENP | 1 |
| 4229EOF180 |  | Jacket miscellaneous design report-Approval | 49d | 2011-11-23 A | 2012-02-09 A | 4229EOF170 SS | 100% |  | 2011-12-04 | 2012-02-09 |  |  |  |  | 1 | ENP | 1 |
| 4229EOF190 |  | Jacket weight control report -Approval | 8d | 2011-12-14 A | 2012-01-26 A | 4229EOF10, 4229EOF170 | 100% |  | 2012-01-01 | 2012-01-10 |  |  |  |  | 1 | ENP | 1 |
| 4229EOF240 |  | Deck miscellaneous design report-Approval | 55d | 2011-12-14 A | 2012-08-27 | 4229EOF360 FF+5d, 4229EOF230 SS | 100% | 0d | 2012-01-01 | 2012-03-18 | 279d | 0d |  | 2012-03-29 | 2 | ENP | 1 |
| 4229EOF250 |  | Pushover analysis design SOW | 18d | 2011-12-15 A | 2011-12-29 A | 4229EOF60 FS-3d | 100% |  | 2012-03-04 | 2012-03-27 |  |  | start on 2012-03-01 |  | 0 | ENP | 1 |
| 4229EOF430 |  | Jacket weight control report -Final | 8d | 2012-01-11 A | 2012-02-09 A | 4229EOF350, 4229EOF260 | 100% |  | 2012-03-25 | 2012-04-03 |  |  |  |  | 1 | ENP | 1 |
| 4229EOF340 |  | Jacket lifting analysis design report-Final | 10d | 2012-01-29 A | 2012-02-09 A | 4229EOF80 FS+10d | 100% |  |  |  |  |  |  |  | 1 | ENP | 1 |
| 4229EOF480 |  | Pushover analysis design T.E.R | 10d | 2012-02-01 A | 2012-03-04 A |  | 100% |  | 2012-05-03 | 2012-05-16 |  |  |  |  | 0 | ENP | 1 |
| 4229EOF320 |  | Jacket loadout analysis design report-Final | 10d | 2012-02-07 A | 2012-02-09 A | 4229EOF60 FS+10d | 100% |  | 2012-03-04 | 2012-03-15 |  |  | start on or after 2012-01-30 |  | 1 | ENP | 1 |
| 4229EOF330 |  | Jacket transportation analysis design report- Final | 10d | 2012-02-07 A | 2012-02-09 A | 4229EOF70 FS+10d | 100% |  | 2012-03-04 | 2012-03-15 |  |  |  |  | 1 | ENP | 1 |
| 4229EOF370 |  | Jacket floatation & upending analysis report-Final | 10d | 2012-02-13 A | 2012-03-07 A | 4229EOF90 FS+10d | 100% |  | 2012-03-27 | 2012-04-09 |  |  |  |  | 1 | ENP | 1 |
| 4229EOF380 |  | Jacket on-bottom stability report-Final | 10d | 2012-02-13 A | 2012-02-26 A | 4229EOF100 FS+10d | 100% |  | 2012-03-29 | 2012-04-11 |  |  |  |  | 1 | ENP | 1 |
| 4229EOF450 |  | Fatigue analysis design report-Final | 10d | 2012-02-21 A | 2012-03-08 A | 4229EOF40 FS+10d | 100% |  | 2012-04-02 | 2012-04-15 |  |  |  |  | 1 | ENP | 1 |
| 4229EOF140 |  | Deck loadout analysis report-Approval | 70d | 2012-02-26 A | 2012-02-26 A | 4229EOF130 SS | 100% |  | 2011-10-27 | 2012-02-09 |  |  |  |  | 2 | ENP | 1 |
| 4229EOF460 |  | Boat impact design analysis report-Final | 10d | 2012-03-11 A | 2012-03-26 A | 4229EOF50 FS+10d | 100% |  | 2012-03-11 | 2012-03-22 |  |  |  |  | 1 | ENP | 1 |
| 4229EOF420 |  | In-place analysis design report-Final | 10d | 2012-08-05 | 2012-08-16 | 4229EOF550 FF+5d |  |  |  |  | 280d | 0d |  | 2012-03-21 | 1 | ENP | 1 |
| 4229EOF500 |  | Deck transportation analysis report-Final | 10d | 2012-08-05 | 2012-08-16 | 4229EOF150 FS+10d, 4229EOF550 FF+5d |  |  |  |  | 280d | 0d |  | 2012-03-21 | 2 | ENP | 1 |
| 4229EOF510 |  | Deck lifting analysis design report-Final | 10d | 2012-08-05 | 2012-08-16 | 4229EOF550 FF+5d |  |  |  |  | 280d | 118d |  |  | 2 | ENP | 1 |
| 4229EOF440 |  | Earthquake analysis design report-Final | 10d | 2012-08-12 | 2012-08-30 | 4229EOF550 FF+10d, 4229EOF40 FS+10d |  |  |  |  | 275d | 0d |  | 2012-03-21 | 1 | ENP | 1 |
| 4229EOF470 |  | Pile foundation design report-Final | 10d | 2012-08-12 | 2012-08-30 | 4229EOF550 |  |  |  |  | 275d | 113d |  |  | 1 | ENP | 1 |
| 4229EOF490 |  | Deck loadout analysis report-Final | 10d | 2012-08-12 | 2012-08-30 | 4229EOF140 FS+10d, 4229EOF550 FF+10d |  |  |  |  | 275d | 0d |  | 2012-03-21 | 2 | ENP | 1 |
| 4229EOF530 |  | Deck miscellaneous design report-Final | 10d | 2012-08-12 | 2012-08-30 | 4229EOF550 |  |  |  |  | 275d | 113d |  |  | 2 | ENP | 1 |
| 4229EOF570 |  | Constructability study report | 10d | 2012-08-15 | 2012-09-05 | 4229EOF610 FF-10d |  |  |  |  | 272d | 110d |  |  | 0 | ENP | 1 |
| 4229EOF610 |  | Topside weight control report- Final | 8d | 2012-09-09 | 2012-09-18 | 4229EOF560, 4229EOF550 |  |  |  |  | 262d | 0d |  |  | 3 | ENP | 1 |
| 4229EOF630 |  | Jacket miscellaneous design report-Final | 10d | 2012-09-09 | 2012-09-20 | 4229EOF560, 4229EOF550 |  |  |  |  | 260d | 98d |  |  | 1 | ENP | 1 |

| ID | WBS | Activity | Duration | Start | Finish | Predecessors | Complete | Planned start | Planned finish | Total float | Free float | Calendar | Work Package | Resp. | Phase-1 |
| --- | --- | --- | --- | --- | --- | --- | --- | --- | --- | --- | --- | --- | --- | --- | --- |
|  | 3 | **Specifications / MTO's** |  | 2011-12-13 | 2011-12-28 |  |  |  |  |  |  |  |  |  |  |
| 4229EOF210 |  | Steel structure specification | 6d | 2011-12-13 A | 2011-12-20 A | 4229EOF170 FS+1d | 100% | 2011-12-14 | 2011-12-20 |  |  | 7 - 7 Days Working Week | 3 | ENP | 1 |
| 4229EOF220 |  | Weight control procedures | 6d | 2011-12-13 A | 2011-12-20 A | 4229EOF210 SS | 100% | 2011-12-14 | 2011-12-20 |  |  | 7 - 7 Days Working Week | 3 | ENP | 1 |
| 4229EOF620 |  | Deck Secondary Steel structure MTO | 5d | 2011-12-18 A | 2011-12-28 A | 4229EOF560, 4229EOF230, 4229EOF130, 4229EOF550 | 100% | 2012-08-30 | 2012-09-04 |  |  | 7 - 7 Days Working Week | 2 | ENP | 1 |
| 4229EOF660 |  | Jacket app. MTO | 5d | 2011-12-18 A | 2011-12-28 A | 4229EOF520 | 100% | 2012-05-21 | 2012-05-26 |  |  | 7 - 7 Days Working Week | 1 | ENP | 1 |
| 4229EOF540 |  | Jacket secondary steel & Piles MTO | 5d | 2011-12-18 A | 2011-12-28 A | 4229EOF10, 4229EOF350, 4229EOF200, 4229EOF260, 4229EOF170 | 100% | 2011-12-18 | 2011-12-22 |  |  | 7 - 7 Days Working Week | 1 | ENP | 1 |
| 4229EOF640 |  | Jacket Primary Steel structure MTO | 5d | 2011-12-18 A | 2011-12-25 A | 4229EOF260 | 100% | 2011-12-18 | 2011-12-22 |  |  | 7 - 7 Days Working Week | 1 | ENP | 1 |
| 4229EOF650 |  | Deck Primary Steel structure MTO | 5d | 2011-12-18 A | 2011-12-28 A | 4229EOF130 | 100% | 2011-12-18 | 2011-12-22 |  |  | 7 - 7 Days Working Week | 2 | ENP | 1 |
|  | 4 | **Additonal studies** |  |  |  |  |  |  |  |  |  |  |  |  |  |
|  | 7 | **Pipeline** |  | 2011-08-15 | 2012-09-13 |  |  |  |  |  |  |  |  |  |  |
|  | 1 | **Drawings /lists** |  | 2011-11-15 | 2012-06-10 |  |  |  |  |  |  |  |  |  |  |
| 4229EPL160 |  | 18" spool arrangement drawing -Approval | 15d | 2011-11-15 A | 2011-12-15 A | 4229EOF10, 4229EPI40 | 100% | 2011-12-04 | 2011-12-22 |  |  |  | 4 | ENP | 1 |
| 4229EPL170 |  | 8" spool arrangement drawing -Approval | 15d | 2011-11-23 A | 2011-12-15 A | 4229EPL160 SS | 100% | 2011-12-04 | 2011-12-22 |  |  |  | 4 | ENP | 1 |
| 4229EPL230 |  | 8" riser arrangement drawing -Approval | 10d | 2011-12-14 A | 2011-12-28 A | 4229EPL240 SS | 100% | 2011-12-14 | 2011-12-27 |  |  |  | 4 | ENP | 1 |
| 4229EPL240 |  | 18" riser arrangement drawing -Approval | 10d | 2011-12-14 A | 2011-12-28 A | 4229EPL160, 4229EPL170 | 100% | 2011-12-14 | 2011-12-27 |  |  |  | 4 | ENP | 1 |
| 4229EPL290 |  | 18" spool arangement drawing -Design | 15d | 2011-12-29 A | 2012-02-13 A | 4229EPL160, 4229EPL160 FF | 100% | 2012-01-01 | 2012-01-19 |  |  |  | 4 | ENP | 1 |
| 4229EPL310 |  | 8" spool arrangement drawing -Design | 15d | 2011-12-29 A | 2012-02-13 A | 4229EPL170 FS+10d | 100% | 2012-01-01 | 2012-01-19 |  |  |  | 4 | ENP | 1 |
| 4229EPL320 |  | 18"Spool ISO-IFD | 15d | 2012-02-01 A | 2012-02-21 A | 4229EPL290 | 100% | 2012-03-04 | 2012-03-22 |  |  |  | 4 | ENP | 1 |
| 4229EPL340 |  | 8"Spool ISO-IFD | 15d | 2012-02-01 A | 2012-02-21 A | 4229EPL310 | 100% | 2012-03-04 | 2012-03-22 |  |  |  | 4 | ENP | 1 |
| 4229EPL330 |  | 8" riser arrangement drawing -Design | 10d | 2012-02-26 A | 2012-02-29 A | 4229EPL310, 4229EPL230 FS+10d | 100% | 2012-03-13 | 2012-03-26 |  |  |  | 4 | ENP | 1 |
| 4229EPL350 |  | 18" riser arrangement drawing -Design | 10d | 2012-02-26 A | 2012-02-29 A | 4229EPL240 FS+10d, 4229EPL330 FS-10d | 100% | 2012-03-13 | 2012-03-26 |  |  |  | 4 | ENP | 1 |
| 4229EPL380 |  | 8"Riser ISO-IFD | 15d | 2012-02-26 A | 2012-03-15 A | 4229EPL330 | 100% | 2012-03-05 | 2012-03-25 |  |  |  | 4 | ENP | 1 |
| 4229EPL400 |  | 18"Riser ISO-IFD | 15d | 2012-02-26 A | 2012-03-15 A | 4229EPL350 | 100% |  |  |  |  |  | 4 | ENP | 1 |
| 4229EPL390 |  | 18" spool arangement drawing -Construction | 15d | 2012-03-18 A | 2012-03-27 A | 4229EPL350, 4229EPL290, 4229EPL330 | 100% | 2012-03-04 | 2012-03-22 |  |  |  | 4 | ENP | 1 |
| 4229EPL410 |  | 8" spool arangement drawing -Construction | 15d | 2012-03-18 A | 2012-03-27 A | 4229EPL310, 4229EPL390 FF | 100% | 2012-03-04 | 2012-03-22 |  |  |  | 4 | ENP | 1 |
| 4229EPL420 |  | 8" riser arrangement drawing -Construction | 15d | 2012-03-25 A | 2012-04-19 A | 4229EPL390, 4229EPL410 | 100% | 2012-04-01 | 2012-04-19 |  |  |  | 4 | ENP | 1 |
| 4229EPL430 |  | 18" riser arrangement drawing -Construction | 15d | 2012-03-25 A | 2012-04-19 A | 4229EPL420 SS | 100% | 2012-04-01 | 2012-04-19 |  |  |  | 4 | ENP | 1 |
| 4229EPL440 |  | 18"Spool ISO-IFC | 0d | 2012-05-02 A | 2012-05-29 A | 4229EPL430, 4229EPL410, 4229EPL420, 4229EPL390 | 100% | 2012-06-03 | 2012-06-03 |  |  |  | 4 | ENP | 1 |
| 4229EPL450 |  | 8"Spool ISO-IFC | 0d | 2012-05-02 A | 2012-05-29 A | 4229EPL390, 4229EPL420, 4229EPL430, 4229EPL410 | 100% | 2012-06-03 | 2012-06-03 |  |  |  | 4 | ENP | 1 |
| 4229EPL460 |  | 8"Riser ISO-IFC | 0d | 2012-05-02 A | 2012-05-29 A | 4229EPL390, 4229EPL430, 4229EPL410, 4229EPL420 | 100% | 2012-06-03 | 2012-06-03 |  |  |  | 4 | ENP | 1 |
| 4229EPL470 |  | 18"Riser ISO-IFC | 0d | 2012-05-02 A | 2012-05-29 A | 4229EPL410, 4229EPL390, 4229EPL430, 4229EPL420 | 100% | 2012-06-03 | 2012-06-03 |  |  |  | 4 | ENP | 1 |
| 4229EPL480 |  | MTO for risers / spools | 6d | 2012-06-03 | 2012-06-10 | 4229EPL460, 4229EPL440, 4229EPL450, 4229EPL470 |  |  |  | 329d | 167d |  | 4 | ENP | 3 |

| ID | WBS | Activity | Duration | Start | Finish | Predecessors | Complete | Remaining | Planned start | Planned finish | Total float | Free float | Work Package | Resp. | Phase-1 | Global Commodity Code | Global Activity Code |
| --- | --- | --- | --- | --- | --- | --- | --- | --- | --- | --- | --- | --- | --- | --- | --- | --- | --- |
|  | 2 | **Reports** |  | 2011-11-30 | 2012-06-07 |  |  |  |  |  |  |  |  |  |  |  |  |
| 4229EPL120 |  | Wall thickness report for risers & spools-Approval | 5d | 2011-11-30 A | 2011-12-05 A | 4229EPL170 SS+5d | 100% |  | 2011-12-11 | 2011-12-15 |  |  | 4 | ENP | 1 |  |  |
| 4229EPL200 |  | Wall thickness report for risers & spools-Final | 5d | 2011-12-06 A | 2011-12-19 A | 4229EPL120 FS+5d | 100% |  | 2011-12-13 | 2011-12-19 |  |  | 4 | ENP | 1 |  |  |
| 4229EPL490 |  | Risers / spoolpieces stress analysis report-Construction | 10d | 2012-04-26 A | 2012-06-07 | 4229EPL440 FF+5d, 4229EPL450 FF+5d, 4229EPL460 FF+5d, 4229EPL470 FF+5d | 50% | 5d | 2012-05-24 | 2012-06-06 | 330d | 168d | 4 | ENP | 1 |  |  |
|  | 3 | **MRQ's** |  | 2011-08-15 | 2012-09-13 |  |  |  |  |  |  |  |  |  |  |  |  |
| 4229EPL10 |  | Pipeline specifications & data sheets | 21d | 2011-08-15 A | 2011-09-14 A | 4229GM10 SS | 100% |  |  |  |  |  | 4 | ENP | 1 |  |  |
| 4229EPL20 |  | MRQ for hot bends | 15d | 2011-09-15 A | 2011-10-02 A | 4229EPL10 | 100% |  | 2011-09-15 | 2011-10-05 |  |  | 4 | ENP | 3 | 61202 | 01 |
| 4229EPL60 |  | MRQ for Kamos ring | 10d | 2011-09-22 A | 2011-10-02 A | 4229EPL20 FF | 100% |  | 2011-09-22 | 2011-10-05 |  |  | 3 | ENP | 3 | 41901 | 01 |
| 4229EPL40 |  | MRQ for heat shrink sleeves | 10d | 2011-09-27 A | 2011-10-11 A | 4229EPL10 FF, 4229EPL10 FS+8d | 100% |  |  |  |  |  | 4 | ENP | 3 | 46201 | 01 |
| 4229EPL80 |  | MRQ for isolating joints | 10d | 2011-10-04 A | 2011-10-19 A | 4229EPL60 SS+8d | 100% |  | 2011-10-04 | 2011-10-18 |  |  | 4 | ENP | 3 | 61203 | 01 |
| 4229EPL30 |  | MRQ for flanges | 5d | 2011-10-09 A | 2011-10-13 A | 4229EPL20 | 100% |  |  |  |  |  | 3 | ENP | 3 | 61205 | 01 |
| 4229EPL560 |  | MRQ for 8" line pipe | 10d | 2011-10-09 A | 2011-10-23 A | 4229EPL50 FF-3d | 100% |  | 2011-10-09 | 2011-10-20 |  |  | 4 | ENP | 3 | 61102 | 01 |
| 4229EPL50 |  | MRQ for anchor flanges | 8d | 2011-10-16 A | 2011-10-25 A | 4229EPL30 | 100% |  |  |  |  |  | 4 | ENP | 3 | 44906 | 01 |
| 4229EPL90 |  | T.E.R for hot bends | 20d | 2011-10-30 A | 2011-12-08 A | 4229PHB20 | 100% |  | 2011-12-04 | 2011-12-29 |  |  | 4 | ENP | 3 | 61202 | 09 |
| 4229EPL130 |  | T.E.R for heat shrink sleeves | 15d | 2011-11-03 A | 2011-12-05 A | 4229PHS20, 4229EPL40 FS+10d | 100% |  | 2011-12-04 | 2011-12-22 |  |  | 4 | ENP | 3 | 46201 | 09 |
| 4229EPL140 |  | T.E.R for kamos ring | 15d | 2011-11-13 A | 2011-11-20 A | 4229PKR20 FF, 4229PKR20 | 100% |  | 2011-12-04 | 2011-12-22 |  |  | 3 | ENP | 3 | 41901 | 09 |
| 4229EPL210 |  | T.E.R for isolating joints | 15d | 2011-11-13 A | 2011-12-08 A | 4229EPL40 FS+10d, 4229PIJ20 | 100% |  | 2011-12-04 | 2011-12-22 |  |  | 4 | ENP | 3 | 61203 | 09 |
| 4229EPL70 |  | T.E.R for 8"line pipe | 20d | 2011-11-22 A | 2012-01-08 A | 4229PPL10 | 100% |  | 2012-01-22 | 2012-02-19 |  |  | 4 | ENP | 3 | 61102 | 09 |
| 4229EPL100 |  | T.E.R for flanges | 20d | 2011-12-01 A | 2012-01-18 A | 4229EPL20 FS+10d, 4229P4220 | 100% |  | 2011-12-05 | 2012-01-01 |  |  | 3 | ENP | 3 | 61205 | 09 |
| 4229EPL180 |  | Welding & NDT specification-Design | 10d | 2011-12-01 A | 2011-12-21 A | 4229EPL250 SS-9d | 100% |  | 2011-12-04 | 2011-12-15 |  |  | 0 | ENP | 1 |  |  |
| 4229EPL150 |  | T.E.R for anchor flanges | 15d | 2011-12-06 A | 2012-01-05 A | 4229PAF20, 4229EPL20 FS+10d | 100% |  | 2011-12-06 | 2011-12-26 |  |  | 4 | ENP | 3 | 44906 | 09 |
| 4229EPL250 |  | Testing & pre-commissioning specification-Approval | 10d | 2011-12-14 A | 2012-01-02 A | 4229EPL160, 4229EPL60, 4229EPL30, 4229EPL170, 4229EPL80, 4229EPL40, 4229EPL50, 4229EPL20 | 100% |  | 2011-12-14 | 2011-12-27 |  |  | 3 | ENP | 1 |  |  |
| 4229EPL270 |  | MRP for kamos ring | 5d | 2011-12-21 A | 2011-12-26 A | 4229PKR60 | 100% |  | 2012-01-08 | 2012-01-12 |  |  | 3 | ENP | 3 | 41901 | 14 |
| 4229EPL370 |  | Welding & NDT specification-Final | 5d | 2012-01-01 A | 2012-03-08 A | 4229EPL180 | 100% |  | 2012-07-19 | 2012-07-25 |  |  | 0 | ENP | 1 |  |  |
| 4229EPL550 |  | VPR for isolating joints | 40d | 2012-01-09 A | 2012-04-16 A | 4229PIJ90 SS+30d | 100% |  | 2012-03-11 | 2012-05-03 |  |  | 4 | ENP | 3 |  |  |
| 4229EPL300 |  | MRP for isolating joints | 1d | 2012-01-24 A | 2012-01-31 A | 4229PIJ60 | 100% |  | 2012-01-29 | 2012-01-29 |  |  | 4 | ENP | 3 | 61203 | 14 |
| 4229EPL260 |  | MRP for heat shrink sleeves | 5d | 2012-01-24 A | 2012-02-02 A | 4229PHS60 | 100% |  | 2012-01-24 | 2012-01-31 |  |  | 4 | ENP | 3 | 46201 | 14 |
| 4229EPL540 |  | VPR for kamos ring | 40d | 2012-02-01 A | 2012-03-01 A | 4229PKR90 SS+30d | 100% |  | 2012-03-04 | 2012-04-26 |  |  | 3 | ENP | 3 |  |  |
| 4229EPL190 |  | MRP for hot bends | 5d | 2012-02-09 A | 2012-02-19 A | 4229PHB70 | 100% |  | 2012-01-29 | 2012-02-02 |  |  | 4 | ENP | 3 | 61202 | 14 |
| 4229EPL280 |  | MRP for anchor flanges | 5d | 2012-02-14 A | 2012-02-28 A | 4229PAF60 | 100% |  | 2012-03-04 | 2012-03-08 |  |  | 4 | ENP | 3 | 44906 | 14 |
| 4229EPL530 |  | VPR for heat shrink sleeves | 40d | 2012-02-19 A | 2012-02-29 A | 4229PHS90 SS+30d | 100% |  | 2012-03-04 | 2012-04-26 |  |  | 4 | ENP | 3 |  |  |
| 4229EPL110 |  | MRP for 8" pipeline | 5d | 2012-02-21 A | 2012-02-26 A | 4229PPL80 | 100% |  | 2012-03-04 | 2012-03-08 |  |  | 4 | ENP | 3 | 61102 | 14 |
| 4229EPL520 |  | VPR for anchor flanges | 40d | 2012-02-21 A | 2012-03-20 A | 4229PAF90 SS+30d | 100% |  | 2012-04-22 | 2012-06-14 |  |  | 4 | ENP | 3 |  |  |
| 4229EPL220 |  | MRP for flanges | 5d | 2012-02-26 A | 2012-02-28 A | 4229PFL60 | 100% |  | 2012-03-07 | 2012-03-13 |  |  | 3 | ENP | 3 | 61205 | 14 |
| 4229EPL510 |  | VPR for flanges | 40d | 2012-03-11 A | 2012-08-02 | 4229PFL90 SS+30d |  | 45d | 2012-03-29 | 2012-05-23 | 290d | 147d | 3 | ENP | 3 |  |  |
| 4229EPL570 |  | VPR for 8"line pipe | 40d | 2012-04-05 A | 2012-06-21 | 4229PPL110 SS+30d | 75% | 10d | 2012-05-06 | 2012-06-28 | 320d |  | 4 | ENP | 3 |  |  |
| 4229EPL500 |  | VPR for hot bends | 40d | 2012-04-18 A | 2012-08-02 | 4229PHB100 SS+30d |  | 40d | 2012-04-08 | 2012-05-31 | 290d | 147d | 4 | ENP | 3 |  |  |
| 4229EPL360 |  | Testing & pre-commissioning specification-Final | 5d | 2012-09-09 | 2012-09-13 | 4229EPL310, 4229EPI220, 4229EPL250 FS+5d, 4229EPL290, 4229EPL330, 4229EPL350 |  |  |  |  | 265d | 103d | 3 | ENP | 1 |  |  |

| ID | WBS | Activity | Type | Duration | Start | Finish | Predecessors | Complete | Remaining | Planned start | Planned finish | Total float | Free float | Constraint | Expected finish | Calendar | Global Commodity Code | Global Activity Code | Work Package | Resp. | Phase-1 |
| --- | --- | --- | --- | --- | --- | --- | --- | --- | --- | --- | --- | --- | --- | --- | --- | --- | --- | --- | --- | --- | --- |
|  | 3 | **Procurement** |  |  | 2011-08-23 | 2013-03-11 |  |  |  |  |  |  |  |  |  |  |  |  |  |  |  |
|  | 13 | **Fire & gas detectors** |  |  | 2012-01-10 | 2012-11-02 |  |  |  |  |  |  |  |  |  |  |  |  |  |  |  |
| 4229PFG10 |  | Issue RFQ for Fire & gas detectors |  | 2d | 2012-01-10 A | 2012-01-10 A |  | 100% |  | 2012-01-10 | 2012-01-11 |  |  | start on or after 2012-01-10 |  |  | 25205 | 03 | 3 | ENP | 3 |
| 4229PFG20 |  | Bidding Fire & gas detectors |  | 17d | 2012-01-11 A | 2012-02-26 A | 4229PFG10 | 100% |  | 2012-03-03 | 2012-03-19 |  |  |  |  | SUPPLIER | 25205 | 04 | 3 | ENP | 3 |
| A1060 |  | T.E.R for fire & Gas detection | level of effort | 15d | 2012-02-27 A | 2012-05-03 A | 4229ELP560 SS, 4229ELP560 FF | 100% |  | 2012-03-20 | 2012-04-09 |  |  |  |  |  |  |  | 3 | ENP | 3 |
| 4229PFG30 |  | Receive revised commercial offers |  | 5d | 2012-05-06 A | 2012-05-10 A | 4229ELP560 | 100% |  | 2012-04-29 | 2012-05-03 |  |  |  |  |  | 25205 | 10 | 3 | ENP | 3 |
| 4229PFG40 |  | commercial evaluation & bid committee for Fire & gas detectors |  | 10d | 2012-05-10 A | 2012-05-13 A | 4229PFG30 | 100% |  | 2012-05-06 | 2012-05-17 |  |  |  |  |  | 25205 | 11 | 3 | ENP | 3 |
| 4229PFG50 |  | Client approval on bid committee reccomendation |  | 2d | 2012-05-14 A | 2012-05-16 A | 4229PFG40 | 100% |  | 2012-05-20 | 2012-05-21 |  |  |  |  |  | 25205 | 12 | 3 | GUP | 3 |
| 4229PFG60 |  | F.O.C for Fire & gas detectors |  | 3d | 2012-05-17 A | 2012-05-27 A | 4229PFG40, 4229PFG50 | 100% |  | 2012-06-10 | 2012-06-12 |  |  |  |  |  | 25205 | 13 | 3 | ENP | 3 |
| A1340 |  | MRP for fire & Gas detection | level of effort | 5d | 2012-05-28 A | 2012-05-29 A | 4229ELP570 FF, 4229ELP570 SS | 100% |  | 2012-06-03 | 2012-06-07 |  |  |  |  |  |  |  | 3 | ENP | 3 |
| 4229PFG70 |  | P.O for Fire & gas detectors |  | 5d | 2012-06-03 | 2012-06-07 | 4229ELP570 |  |  |  |  | 232d | 0d |  |  |  | 25205 | 15 | 3 | ENP | 3 |
| 4229PFG80 |  | L.C issued by Gupco |  | 5d | 2012-06-10 | 2012-06-14 | 4229PFG70 |  |  |  |  | 232d | 0d |  |  |  | 25205 |  | 3 | GUP | 3 |
| 4229PFG90 |  | Fabrication upto R.F.S |  | 84d | 2012-06-15 | 2012-09-18 | 4229PFG70, 4229PFG80 |  |  |  |  | 328d | 0d |  |  | SUPPLIER | 25205 | 16 | 3 | ENP | 3 |
| 4229PFG100 |  | Delivery upto site |  | 45d | 2012-09-19 | 2012-11-02 | 4229PFG90 |  |  |  |  | 330d | 131d |  |  | calendar | 25205 | 21 | 3 | ENP | 3 |
|  | 22 | **Pressure safety valves** |  |  | 2011-10-19 | 2012-09-25 |  |  |  |  |  |  |  |  |  |  |  |  |  |  |  |
| 4229PSV10 |  | Issue RFQ for PSV |  | 2d | 2011-10-19 A | 2011-10-20 A | 4229EPR60 | 100% |  | 2011-10-16 | 2011-10-17 |  |  |  |  |  | 24701 | 03 | 3 | ENP | 3 |
| 4229PSV20 |  | Bidding for PSV |  | 30d | 2011-10-21 A | 2011-11-16 A | 4229PSV10 | 100% |  | 2011-10-18 | 2011-11-16 |  |  |  |  | SUPPLIER | 24701 | 04 | 3 | ENP | 3 |
| A1040 |  | T.E.R for PSV | level of effort | 27.88d | 2011-11-17 A | 2012-01-31 A | 4229EPR160 FF, 4229EPR160 SS | 100% |  | 2011-11-16 | 2011-12-25 |  |  |  |  |  |  |  | 3 | ENP | 3 |
| 4229PSV30 |  | Receive revised commercial offers |  | 5d | 2012-02-01 A | 2012-02-27 A | 4229EPR160 | 100% |  | 2012-02-01 | 2012-02-07 |  |  |  |  |  | 24701 | 10 | 3 | ENP | 3 |
| 4229PSV40 |  | commercial evaluation & bid committee for PSV |  | 10d | 2012-02-28 A | 2012-03-06 A | 4229PSV30, 4229EPR160 | 100% |  | 2012-03-04 | 2012-03-15 |  |  |  |  |  | 24701 | 11 | 3 | ENP | 3 |
| 4229PSV50 |  | Client approval on bid committee reccomendation |  | 2d | 2012-03-07 A | 2012-04-02 A | 4229PSV40 | 100% |  | 2012-04-01 | 2012-04-02 |  |  |  |  |  | 24701 | 12 | 3 | GUP | 3 |
| 4229PSV60 |  | F.O.C for PSV |  | 3d | 2012-04-02 A | 2012-04-03 A | 4229PSV50, 4229PSV40 | 100% |  | 2012-04-03 | 2012-04-05 |  |  |  |  |  | 24701 | 13 | 3 | ENP | 3 |
| A1320 |  | MRP for PSV | level of effort | 2d | 2012-04-05 A | 2012-04-09 A | 4229EPR170 FF, 4229EPR170 SS | 100% |  | 2012-04-05 | 2012-04-08 |  |  |  |  |  |  |  | 3 | ENP | 3 |
| 4229PSV70 |  | P.O for PSV |  | 5d | 2012-04-10 A | 2012-04-11 A | 4229EPR170 | 100% |  | 2012-04-10 | 2012-04-16 |  |  |  |  |  | 24701 | 15 | 3 | ENP | 3 |
| 4229PSV90 |  | Fabrication upto R.F.S |  | 147d | 2012-04-11 A | 2012-09-11 | 4229PSV70, 4229PSV80 | 43% | 84d | 2012-04-06 | 2012-09-11 | 194d | 0d |  | 2012-09-11 | SUPPLIER | 24701 | 16 | 3 | ENP | 3 |
| 4229PSV80 |  | L.C issued by Gupco |  | 5d | 2012-06-03 | 2012-06-07 | 4229PSV70 |  |  |  |  | 136d | 0d |  |  |  | 24701 |  | 3 | GUP | 3 |
| 4229PSV100 |  | Delivery upto site |  | 14d | 2012-09-12 | 2012-09-25 | 4229PSV90 |  |  |  |  | 368d | 115d |  |  | calendar | 24701 | 21 | 3 | ENP | 3 |

| ID | WBS | Activity | Type | Duration | Start | Finish | Predecessors | Complete | Remaining | Planned start | Planned finish | Total float | Free float | Constraint | Expected finish | Calendar | Global Commodity Code | Global Activity Code | Work Package | Resp. | Phase-1 |
| --- | --- | --- | --- | --- | --- | --- | --- | --- | --- | --- | --- | --- | --- | --- | --- | --- | --- | --- | --- | --- | --- |
|  | 3 | **Fire fighting system** |  |  | 2012-01-09 | 2013-01-01 |  |  |  |  |  |  |  |  |  |  |  |  |  |  |  |
| 4229PFF10 |  | Issue RFQ for Fire fighting |  | 2d | 2012-01-09 A | 2012-01-10 A | 4229ELP60 | 100% |  |  |  |  |  | start on or after 2012-01-09 |  |  | 19004 | 03 | 3 | ENP | 3 |
| 4229PFF110 |  | Re-issue RFQ for Fire Fighting |  | 1d | 2012-03-01 A | 2012-03-03 A | 4229PFF10 | 100% |  | 2012-04-29 | 2012-04-29 |  |  |  |  |  |  |  | 3 | ENP | 3 |
| 4229PFF20 |  | Bidding for Fire fighting |  | 20d | 2012-03-04 A | 2012-04-03 A | 4229PFF10, 4229PFF110 | 100% |  | 2012-01-11 | 2012-01-31 |  |  | start on or after 2012-01-11 |  | SUPPLIER | 19004 | 04 | 3 | ENP | 3 |
| A1050 |  | T.E.R for fire fighting system | level of effort | 21d | 2012-04-03 A | 2012-05-29 A | 4229ELP170 FF, 4229ELP170 SS | 100% |  | 2012-04-03 | 2012-05-01 |  |  |  |  |  |  |  | 3 | ENP | 3 |
| 4229PFF30 |  | Receive revised commercial offers |  | 5d | 2012-05-30 A | 2012-06-05 | 4229ELP170 | 40% | 3d | 2012-06-03 | 2012-06-07 | 189d | 0d |  |  |  | 19004 | 10 | 3 | ENP | 3 |
| 4229PFF40 |  | commercial evaluation & bid committee for Fire fighting |  | 10d | 2012-06-06 | 2012-06-19 | 4229PFF30, 4229ELP170 |  |  |  |  | 189d | 0d |  |  |  | 19004 | 11 | 3 | ENP | 3 |
| 4229PFF50 |  | Client approval on bid committee reccomendation |  | 2d | 2012-06-20 | 2012-06-21 | 4229PFF40 |  |  |  |  | 189d | 0d |  |  |  | 19004 | 12 | 3 | GUP | 3 |
| 4229PFF60 |  | F.O.C for Fire fighting |  | 3d | 2012-06-24 | 2012-06-26 | 4229PFF50, 4229PFF40 |  |  |  |  | 189d | 0d |  |  |  | 19004 | 13 | 3 | ENP | 3 |
| A1330 |  | MRP for fire fighting system | level of effort | 5d | 2012-06-27 | 2012-07-03 | 4229ELP330 FF, 4229ELP330 SS |  |  |  |  | 189d | 0d |  |  |  |  |  | 3 | ENP | 3 |
| 4229PFF70 |  | P.O for Fire fighting |  | 5d | 2012-07-04 | 2012-07-10 | 4229ELP330 |  |  |  |  | 189d | 0d |  |  |  | 19004 | 15 | 3 | ENP | 3 |
| 4229PFF80 |  | L.C issued by Gupco |  | 5d | 2012-07-11 | 2012-07-17 | 4229PFF70 |  |  |  |  | 189d | 0d |  |  |  | 19004 |  | 3 | GUP | 3 |
| 4229PFF90 |  | Fabrication upto R.F.S |  | 112d | 2012-07-18 | 2012-11-18 | 4229PFF80, 4229PFF70 |  |  |  |  | 267d | 0d |  |  | SUPPLIER | 19004 | 16 | 3 | ENP | 3 |
| 4229PFF100 |  | Delivery upto site |  | 45d | 2012-11-19 | 2013-01-01 | 4229PFF90 |  |  |  |  | 269d | 70d |  |  | calendar | 19004 | 21 | 3 | ENP | 3 |
|  | 6 | **Chemical injection PKG** |  |  | 2011-08-24 | 2012-09-20 |  |  |  |  |  |  |  |  |  |  |  |  |  |  |  |
| 4229PCI10 |  | Issue RFQ for Chemical injection Pkg. |  | 2d | 2011-08-24 A | 2011-08-25 A | 4229GM10 FS+1d, 4229EPR10 FS-1d | 100% |  |  |  |  |  |  |  |  | 16506 | 03 | 3 | ENP | 3 |
| 4229PCI20 |  | Bidding for Chemical injection Pkg. |  | 24d | 2011-08-26 A | 2011-09-19 A | 4229PCI10 | 100% |  | 2011-08-26 | 2011-09-18 |  |  |  |  | SUPPLIER | 16506 | 04 | 3 | ENP | 3 |
| A1030 |  | T.E.R for Chemical injection | level of effort | 20d | 2011-09-19 A | 2011-11-24 A | 4229EPR70 FF, 4229EPR70 SS | 100% |  | 2011-09-19 | 2011-10-17 |  |  |  |  |  |  |  | 3 | ENP | 3 |
| 4229PCI30 |  | Receive revised commercial offers |  | 5d | 2012-02-05 A | 2012-02-27 A | 4229EPR70 FS+15d, 4229EPR310 | 100% |  | 2012-03-25 | 2012-03-29 |  |  |  |  |  | 16506 | 10 | 3 | ENP | 3 |
| 4229PCI40 |  | Commercial evaluation & bid committee for Chemical injection Pkg. |  | 10d | 2012-02-28 A | 2012-03-06 A | 4229PCI30, 4229EPR70 | 100% |  | 2012-03-04 | 2012-03-15 |  |  |  |  |  | 16506 | 11 | 3 | ENP | 3 |
| 4229PCI60 |  | F.O.C for Chemical injection Pkg. |  | 3d | 2012-03-07 A | 2012-03-20 A | 4229PCI40, 4229PCI50 | 100% |  | 2012-04-01 | 2012-04-03 |  |  |  |  |  | 16506 | 13 | 3 | ENP | 3 |
| 4229PCI50 |  | Client approval on bid committee reccomendation |  | 2d | 2012-03-13 A | 2012-03-18 A | 4229PCI40 | 100% |  | 2012-03-13 | 2012-03-14 |  |  |  |  |  | 16506 | 12 | 3 | GUP | 3 |
| 4229PCI90 |  | Fabrication upto R.F.S |  | 140d | 2012-03-21 A | 2012-08-06 | 4229PCI80, 4229PCI70 | 57% | 60d | 2012-04-06 | 2012-09-04 | 194d | 0d |  | 2012-08-06 | SUPPLIER | 16506 | 16 | 3 | ENP | 3 |
| A1310 |  | MRP for Chemical injection | level of effort | 3d | 2012-03-25 A | 2012-04-05 A | 4229EPR150 FF, 4229EPR150 SS | 100% |  | 2012-03-25 | 2012-03-27 |  |  |  |  |  |  |  | 3 | ENP | 3 |
| 4229PCI70 |  | P.O for Chemical injection Pkg. |  | 5d | 2012-04-08 A | 2012-04-08 A | 4229EPR150, 4229PCI60 | 100% |  | 2012-04-01 | 2012-04-05 |  |  |  |  |  | 16506 | 15 | 3 | ENP | 3 |
| 4229PCI80 |  | L.C issued by Gupco |  | 5d | 2012-06-03 | 2012-06-07 | 4229PCI70 |  |  |  |  | 136d | 0d |  |  |  | 16506 |  | 3 | GUP | 3 |
| 4229PCI100 |  | Delivery upto site |  | 45d | 2012-08-07 | 2012-09-20 | 4229PCI90 |  |  |  |  | 373d | 174d |  |  | calendar | 16506 | 21 | 3 | ENP | 3 |

| ID | WBS | Activity | Type | Duration | Start | Finish | Predecessors | Complete | Remaining | Planned start | Planned finish | Total float | Free float | Constraint | Expected finish | Calendar | Global Commodity Code | Global Activity Code | Work Package | Resp. | Phase-1 |
| --- | --- | --- | --- | --- | --- | --- | --- | --- | --- | --- | --- | --- | --- | --- | --- | --- | --- | --- | --- | --- | --- |
|  | 31 | **Life saving equipment (Cancelled)** |  |  | 2012-01-05 | 2012-05-23 |  |  |  |  |  |  |  |  |  |  |  |  |  |  |  |
| 4229PFG110 |  | Issue RFQ for Life saving equipment |  | 2d | 2012-01-05 A | 2012-01-05 A | 4229ELP590 | 100% |  | 2012-01-05 | 2012-01-08 |  |  | start on or after 2012-01-05 |  |  | 19003 | 03 | 3 | ENP | 3 |
| 4229PFG120 |  | Bidding Life saving equipment |  | 25d | 2012-01-09 A | 2012-02-28 A | 4229PFG110 | 100% |  | 2012-01-09 | 2012-02-03 |  |  | start on or after 2012-01-09 |  | SUPPLIER | 19003 | 04 | 3 | ENP | 3 |
| A1070 |  | T.E.R for life saving equipment | level of effort | 15d | 2012-02-15 A | 2012-05-15 A | 4229ELP600 SS, 4229ELP600 FF | 100% |  | 2012-03-04 | 2012-03-22 |  |  |  |  |  |  |  | 3 | ENP | 3 |
| A1350 |  | MRP for life saving equipment | level of effort | 0d | 2012-05-15 A | 2012-05-15 A | 4229ELP610 FF, 4229ELP610 SS | 100% |  |  |  |  |  |  |  |  |  |  | 3 | ENP | 3 |
| 4229PFG130 |  | commercial evaluation & bid committee for Life saving equipment |  | 10d | 2012-05-23 A | 2012-05-23 A | 4229PFG180 | 100% |  | 2012-06-10 | 2012-06-21 |  |  |  |  |  | 19003 | 11 | 3 | ENP | 3 |
| 4229PFG140 |  | F.O.C for Life saving equipment |  | 3d | 2012-05-23 A | 2012-05-23 A | 4229PFG130, 4229PFG190 | 100% |  | 2012-06-26 | 2012-06-28 |  |  |  |  |  | 19003 | 13 | 3 | ENP | 3 |
| 4229PFG150 |  | P.O for Life saving equipment |  | 5d | 2012-05-23 A | 2012-05-23 A | 4229ELP610 | 100% |  | 2012-07-01 | 2012-07-05 |  |  |  |  |  | 19003 | 15 | 3 | ENP | 3 |
| 4229PFG160 |  | Fabrication upto R.F.S |  | 90d | 2012-05-23 A | 2012-05-23 A | 4229PFG150, 4229PFG200 | 100% |  | 2012-07-13 | 2012-10-22 |  |  |  |  | SUPPLIER | 19003 | 16 | 3 | ENP | 3 |
| 4229PFG170 |  | Delivery upto site |  | 45d | 2012-05-23 A | 2012-05-23 A | 4229PFG160 | 100% |  | 2012-10-23 | 2012-12-06 |  |  |  |  | calendar | 19003 | 21 | 3 | ENP | 3 |
| 4229PFG180 |  | Receive revised commercial offers |  | 5d | 2012-05-23 A | 2012-05-23 A | 4229ELP600 | 100% |  | 2012-06-03 | 2012-06-07 |  |  |  |  |  | 19003 | 10 | 3 | ENP | 3 |
| 4229PFG190 |  | Client approval on bid committee reccomendation |  | 2d | 2012-05-23 A | 2012-05-23 A | 4229PFG130 | 100% |  | 2012-06-24 | 2012-06-25 |  |  |  |  |  | 19003 | 12 | 3 | GUP | 3 |
| 4229PFG200 |  | L.C issued by Gupco |  | 5d | 2012-05-23 A | 2012-05-23 A | 4229PFG150 | 100% |  | 2012-07-08 | 2012-07-12 |  |  |  |  |  | 19003 |  | 3 | GUP | 3 |
|  | 7 | **Piping Bulk** |  |  | 2011-11-24 | 2013-03-11 |  |  |  |  |  |  |  |  |  |  |  |  |  |  |  |
| 4229PPB10 |  | Issue RFQ for Piping bulk |  | 2d | 2011-11-24 A | 2011-11-24 A | 4229GM10, 4229EPI60 | 100% |  | 2011-12-04 | 2011-12-05 |  |  |  |  |  | 40001 | 03 | 3 | ENP | 3 |
| 4229PPB20 |  | Bidding for Piping bulk |  | 14d | 2011-11-25 A | 2011-12-20 A | 4229PPB10 | 100% |  | 2011-12-06 | 2011-12-19 |  |  |  |  | SUPPLIER | 40001 | 04 | 3 | ENP | 3 |
| A1100 |  | T.E.R for Piping bulk | level of effort | 15d | 2011-12-22 A | 2012-01-26 A | 4229EPI90 FF, 4229EPI90 SS | 100% |  | 2011-12-13 | 2012-01-02 |  |  |  |  |  |  |  | 3 | ENP | 3 |
| 4229PPB30 |  | Receive revised commercial offers |  | 5d | 2012-01-25 A | 2012-02-07 A | 4229EPI90 | 100% |  | 2012-01-26 | 2012-02-01 |  |  |  |  |  | 40001 | 10 | 3 | ENP | 3 |
| 4229PPB40 |  | commercial evaluation & bid committee for Piping bulk |  | 12d | 2012-02-08 A | 2012-02-23 A | 4229PPB30, 4229EPI90 | 100% |  | 2012-03-11 | 2012-03-26 |  |  |  |  |  | 40001 | 11 | 3 | ENP | 3 |
| 4229PPB50 |  | Client approval on bid committee reccomendation |  | 2d | 2012-02-23 A | 2012-02-29 A | 4229PPB40 | 100% |  | 2012-03-04 | 2012-03-05 |  |  |  |  |  | 40001 | 12 | 3 | GUP | 3 |
| 4229PPB60 |  | F.O.C for Piping bulk |  | 3d | 2012-03-01 A | 2012-03-18 A | 4229PPB50, 4229PPB40 | 100% |  | 2012-04-03 | 2012-04-05 |  |  |  |  |  | 40001 | 13 | 3 | ENP | 3 |
| A1370 |  | MRP for Piping bulk | level of effort | 7d | 2012-03-19 A | 2012-03-27 A | 4229EPI140 FF, 4229EPI140 SS | 100% |  |  |  |  |  |  |  |  |  |  | 3 | ENP | 3 |
| 4229PPB70 |  | P.O for Piping bulk |  | 2d | 2012-03-28 A | 2012-03-29 A | 4229EPI140 | 100% |  | 2012-04-01 | 2012-04-02 |  |  |  |  |  | 40001 | 15 | 3 | ENP | 3 |
| 4229PPB90 |  | Fabrication upto R.F.S (1st Batch) |  | 98d | 2012-04-01 A | 2012-07-31 | 4229PPB80, 4229PPB70 | 45% | 54d | 2012-04-06 | 2012-07-12 | 365d | 0d |  | 2012-07-31 | SUPPLIER | 40001 | 16 | 3 | ENP | 3 |
| 4229PPB80 |  | L.C issued by Gupco |  | 5d | 2012-06-03 | 2012-06-07 | 4229PPB70 |  |  |  |  | 259d | 0d |  |  |  |  |  | 3 | GUP | 3 |
| 4229PPB100 |  | Delivery upto site (1st Batch) |  | 45d | 2012-08-01 | 2012-09-14 | 4229PPB90 |  |  |  |  | 379d | 126d |  |  | calendar | 40001 | 21 | 3 | ENP | 3 |
| 4229PPB110 |  | Fabrication upto R.F.S for minimal piping balance |  | 120d | 2012-09-28 | 2013-01-25 | 4229EPI190, 4229EPI280 FS+20d |  |  |  |  | 199d | 0d |  |  | SUPPLIER |  |  | 3 | ENP | 3 |
| 4229PPB120 |  | Delivery upto site (2nd Batch) for minimal piping balance |  | 45d | 2013-01-26 | 2013-03-11 | 4229PPB110 |  |  |  |  | 199d | 0d |  |  | calendar |  |  | 3 | ENP | 3 |

| ID | WBS | Activity | Type | Duration | Start | Finish | Predecessors | Complete | Remaining | Planned start | Planned finish | Total float | Free float | Expected finish | Calendar | Global Commodity Code | Global Activity Code | Work Package | Resp. | Phase-1 |
| --- | --- | --- | --- | --- | --- | --- | --- | --- | --- | --- | --- | --- | --- | --- | --- | --- | --- | --- | --- | --- |
|  | 35 | **Additional piping bulk** |  |  | 2012-05-15 | 2013-01-29 |  |  |  |  |  |  |  |  |  |  |  |  |  |  |
| 4229PAP100 |  | Issue RFQ for Piping bulk |  | 2d | 2012-05-15 A | 2012-05-16 A | 4229EPI310 | 100% |  | 2012-04-29 | 2012-04-30 |  |  |  |  | 40003 | 03 | 3 | ENP | 3 |
| 4229PAP110 |  | Bidding for Piping bulk |  | 25d | 2012-05-17 A | 2012-06-10 | 4229PAP100 | 64% | 9d | 2012-05-01 | 2012-05-25 | 236d | 0d | 2012-06-10 | SUPPLIER | 40003 | 04 | 3 | ENP | 3 |
| 4229PAP120 |  | T.E.R for Piping bulk | level of effort | 20d | 2012-06-11 | 2012-07-08 | 4229EPI320 SS, 4229EPI320 FF |  |  |  |  | 168d | 0d |  |  |  |  | 3 | ENP | 3 |
| 4229PAP130 |  | Receive revised commercial offers |  | 5d | 2012-07-09 | 2012-07-15 | 4229EPI320 |  |  |  |  | 168d | 0d |  |  | 40003 | 10 | 3 | ENP | 3 |
| 4229PAP140 |  | commercial evaluation & bid committee for Piping bulk |  | 12d | 2012-07-16 | 2012-07-31 | 4229PAP130 |  |  |  |  | 168d | 0d |  |  | 40003 | 11 | 3 | ENP | 3 |
| 4229PAP150 |  | Client approval on bid committee reccomendation |  | 2d | 2012-08-01 | 2012-08-02 | 4229PAP140 |  |  |  |  | 168d | 0d |  |  | 40003 | 12 | 3 | GUP |  |
| 4229PAP160 |  | F.O.C for Piping bulk |  | 3d | 2012-08-05 | 2012-08-07 | 4229PAP150, 4229PAP140 |  |  |  |  | 168d | 0d |  |  | 40003 | 13 | 3 | ENP | 3 |
| 4229PAP170 |  | MRP for Piping bulk | level of effort | 5d | 2012-08-08 | 2012-08-14 | 4229EPI330 SS, 4229EPI330 FF |  |  |  |  | 275d | 0d |  |  |  |  | 3 | ENP | 3 |
| 4229PAP200 |  | Fabrication upto R.F.S |  | 120d | 2012-08-08 | 2012-12-17 | 4229PAP160 |  |  |  |  | 238d | 0d |  | SUPPLIER | 40003 | 16 | 3 | ENP | 3 |
| 4229PAP180 |  | P.O for Piping bulk |  | 2d | 2012-08-15 | 2012-08-16 | 4229EPI330, 4229PAP170 |  |  |  |  | 275d | 0d |  |  | 40003 | 15 | 3 | ENP | 3 |
| 4229PAP190 |  | L.C issued by Gupco |  | 5d | 2012-08-26 | 2012-08-30 | 4229PAP180 |  |  |  |  | 275d |  |  |  | 40003 | 12 | 3 | GUP | 3 |
| 4229PAP210 |  | Delivery upto site |  | 45d | 2012-12-18 | 2013-01-29 | 4229PAP200 |  |  |  |  | 240d |  |  | calendar | 40003 | 21 | 3 | ENP | 3 |
|  | 8 | **Piping Gate,Globe & Butterfly valves** |  |  | 2011-12-08 | 2013-03-11 |  |  |  |  |  |  |  |  |  |  |  |  |  |  |
| 4229PPV10 |  | Issue RFQ for Piping valves |  | 2d | 2011-12-08 A | 2011-12-08 A | 4229GM10 | 100% |  | 2012-01-01 | 2012-01-02 |  |  |  |  | 40002 | 03 | 3 | ENP | 3 |
| 4229PPV20 |  | Bidding for Piping valves |  | 14d | 2011-12-09 A | 2012-01-03 A | 4229PPV10 | 100% |  | 2012-01-08 | 2012-01-21 |  |  |  | SUPPLIER | 40002 | 04 | 3 | ENP | 3 |
| A1110 |  | T.E.R for Piping valves | level of effort | 21d | 2012-01-12 A | 2012-02-08 A | 4229EPI110 FF, 4229EPI110 SS | 100% |  | 2012-01-12 | 2012-02-12 |  |  |  |  |  |  | 3 | ENP | 3 |
| 4229PPV30 |  | Receive revised commercial offers |  | 5d | 2012-02-09 A | 2012-02-22 A | 4229EPI110 | 100% |  | 2012-03-04 | 2012-03-08 |  |  |  |  | 40002 | 10 | 3 | ENP | 3 |
| 4229PPV40 |  | commercial evaluation & bid committee for Piping valves |  | 10d | 2012-02-23 A | 2012-03-14 A | 4229PPV30, 4229EPI110 | 100% |  | 2012-03-11 | 2012-03-22 |  |  |  |  | 40002 | 11 | 3 | ENP | 3 |
| 4229PPV50 |  | Client approval on bid committee reccomendation |  | 2d | 2012-03-15 A | 2012-04-04 A | 4229PPV40 | 100% |  | 2012-04-15 | 2012-04-16 |  |  |  |  | 40002 | 12 | 3 | GUP | 3 |
| 4229PPV60 |  | F.O.C for Piping valves |  | 3d | 2012-04-05 A | 2012-04-05 A | 4229PPV40, 4229PPV50 | 100% |  | 2012-04-09 | 2012-04-11 |  |  |  |  | 40002 | 13 | 3 | ENP | 3 |
| A1380 |  | MRP for Piping valves | level of effort | 4d | 2012-04-08 A | 2012-04-12 A | 4229EPI150 SS, 4229EPI150 FF | 100% |  | 2012-04-08 | 2012-04-11 |  |  |  |  |  |  | 3 | ENP | 3 |
| 4229PPV70 |  | P.O for Piping valves |  | 2d | 2012-04-12 A | 2012-04-17 A | 4229EPI150 | 100% |  | 2012-04-12 | 2012-04-15 |  |  |  |  | 40002 | 15 | 3 | ENP | 3 |
| 4229PPV90 |  | Fabrication upto R.F.S (1st Batch) |  | 136d | 2012-04-17 A | 2012-08-19 | 4229PPV70, 4229PPV80 | 46% | 73d | 2012-04-06 | 2012-08-19 | 215d | 0d | 2012-08-19 | SUPPLIER | 40002 | 16 | 3 | ENP | 3 |
| 4229PPV80 |  | L.C issued by Gupco |  | 5d | 2012-06-03 | 2012-06-07 | 4229PPV70 |  |  |  |  | 151d | 0d |  |  |  |  | 3 | GUP | 3 |
| 4229PPV110 |  | Delivery upto site (1st Batch) |  | 14d | 2012-08-20 | 2012-09-02 | 4229PPV90 |  |  |  |  | 391d | 192d |  | calendar | 40002 | 21 | 3 | ENP | 3 |
| 4229PPV100 |  | Fabrication upto R.F.S (2nd Batch) for minimal balance |  | 120d | 2012-09-28 | 2013-01-25 | 4229EPI190, 4229EPI280 FS+20d |  |  |  |  | 199d | 0d |  | SUPPLIER | 40002 | 16 | 3 | ENP | 3 |
| 4229PPV120 |  | Delivery upto site (2nd Batch) for minimal balance |  | 45d | 2013-01-26 | 2013-03-11 | 4229PPV100 |  |  |  |  | 199d | 0d |  | calendar | 40002 | 21 | 3 | ENP | 3 |

| ID | WBS | Activity | Type | Duration | Start | Finish | Predecessors | Complete | Remaining | Planned start | Planned finish | Total float | Free float | Expected finish | Calendar | Global Commodity Code | Global Activity Code | Work Package | Resp. | Phase-1 |
| --- | --- | --- | --- | --- | --- | --- | --- | --- | --- | --- | --- | --- | --- | --- | --- | --- | --- | --- | --- | --- |
|  | 32 | **Piping Ball Valves** |  |  | 2011-12-08 | 2013-03-11 |  |  |  |  |  |  |  |  |  |  |  |  |  |  |
| 4229PBV10 |  | Issue RFQ for Piping Ball Valves |  | 2d | 2011-12-08 A | 2011-12-08 A | 4229EPI50 | 100% |  | 2012-01-01 | 2012-01-02 |  |  |  |  | 42206 | 03 | 3 | ENP | 3 |
| 4229PBV20 |  | Bidding for Piping Ball Valves |  | 14d | 2011-12-09 A | 2012-01-11 A | 4229PBV10 | 100% |  | 2012-01-08 | 2012-01-21 |  |  |  | SUPPLIER | 42206 | 04 | 3 | ENP | 3 |
| 4229PBV30 |  | T.E.R for Piping Ball Valves | level of effort | 12d | 2012-01-12 A | 2012-02-13 A | 4229EPI290 SS, 4229EPI290 FF | 100% |  | 2012-01-15 | 2012-01-31 |  |  |  |  |  |  | 3 | ENP | 3 |
| 4229PBV40 |  | Receive revised commercial offers |  | 5d | 2012-02-14 A | 2012-03-13 A | 4229PBV20, 4229EPI290 | 100% |  | 2012-03-04 | 2012-03-08 |  |  |  |  | 42206 | 10 | 3 | ENP | 3 |
| 4229PBV50 |  | commercial evaluation & bid committee |  | 10d | 2012-03-14 A | 2012-03-26 A | 4229PBV40 | 100% |  | 2012-04-02 | 2012-04-15 |  |  |  |  | 42206 | 11 | 3 | ENP | 3 |
| 4229PBV60 |  | Client approval on bid committee reccomendation |  | 2d | 2012-03-27 A | 2012-04-03 A | 4229PBV50 | 100% |  | 2012-04-01 | 2012-04-02 |  |  |  |  | 42206 | 12 | 3 | GUP | 3 |
| 4229PBV70 |  | F.O.C for Piping Ball Valves |  | 3d | 2012-04-04 A | 2012-04-05 A | 4229PBV60, 4229PBV80, 4229PBV50 | 100% |  | 2012-04-09 | 2012-04-11 |  |  |  |  | 42206 | 13 | 3 | ENP | 3 |
| 4229PBV80 |  | MRP for Piping Ball Valves | level of effort | 4d | 2012-04-08 A | 2012-04-12 A | 4229EPI300 SS, 4229EPI300 FF | 100% |  | 2012-04-08 | 2012-04-11 |  |  |  |  |  |  | 3 | ENP | 3 |
| 4229PBV90 |  | P.O for Piping Ball Valves |  | 2d | 2012-04-15 A | 2012-04-17 A | 4229EPI300 | 100% |  | 2012-04-12 | 2012-04-15 |  |  |  |  | 42206 | 15 | 3 | ENP | 3 |
| 4229PBV110 |  | Fabrication upto R.F.S (1st Batch) |  | 126d | 2012-04-17 A | 2012-08-19 | 4229PBV150, 4229PBV90, 4229PBV70 | 42% | 73d | 2012-04-23 | 2012-09-07 | 346d | 0d | 2012-08-19 | SUPPLIER | 42206 | 16 | 3 | ENP | 3 |
| 4229PBV150 |  | L.C issued by Gupco |  | 5d | 2012-06-03 | 2012-06-07 | 4229PBV90 |  |  |  |  | 245d | 0d |  |  |  |  | 3 | GUP | 3 |
| 4229PBV130 |  | Delivery upto site (1st Batch) |  | 45d | 2012-08-20 | 2012-10-03 | 4229PBV110 |  |  |  |  | 360d |  |  | calendar | 42206 | 21 | 3 | ENP | 3 |
| 4229PBV120 |  | Fabrication upto R.F.S (2nd Batch) for minimal balance |  | 120d | 2012-09-28 | 2013-01-25 | 4229EPI280 FS+20d |  |  |  |  | 199d | 0d |  | SUPPLIER |  |  | 3 | ENP | 3 |
| 4229PBV140 |  | Delivery upto site (2nd Batch) for minimal balance |  | 45d | 2013-01-26 | 2013-03-11 | 4229PBV120 |  |  |  |  | 199d |  |  | calendar |  |  | 3 | ENP | 3 |
|  | 2 | **Launcher & Receiver traps** |  |  | 2011-08-23 | 2012-10-23 |  |  |  |  |  |  |  |  |  |  |  |  |  |  |
| 4229PTR10 |  | Issue RFQ for L&R traps |  | 2d | 2011-08-23 A | 2011-08-25 A | 4229EPI10 FS-1d | 100% |  | 2011-08-23 | 2011-08-24 |  |  |  |  | 47101 | 03 | 3 | ENP | 3 |
| 4229PTR20 |  | Bidding for L&R traps |  | 28d | 2011-08-26 A | 2011-09-19 A | 4229PTR10 | 100% |  | 2011-08-25 | 2011-09-21 |  |  |  | SUPPLIER | 47101 | 04 | 3 | ENP | 3 |
| A1080 |  | T.E.R for L&R | level of effort | 15d | 2011-09-22 A | 2011-12-04 A | 4229EPI30 SS, 4229EPI30 FF | 100% |  | 2011-09-22 | 2011-10-13 |  |  |  |  |  |  | 3 | ENP | 3 |
| 4229PTR30 |  | Receive revised commercial offers |  | 5d | 2011-12-05 A | 2011-12-11 A | 4229EPI30 | 100% |  | 2012-01-01 | 2012-01-05 |  |  |  |  | 47101 | 10 | 3 | ENP | 3 |
| 4229PTR40 |  | commercial evaluation & bid committee for L&R traps |  | 10d | 2011-12-12 A | 2011-12-22 A | 4229EPI30, 4229PTR30 | 100% |  | 2012-01-08 | 2012-01-19 |  |  |  |  | 47101 | 11 | 3 | ENP | 3 |
| 4229PTR50 |  | Client approval on bid committee reccomendation |  | 2d | 2011-12-25 A | 2012-01-31 A | 4229PTR40 | 100% |  | 2012-01-22 | 2012-01-23 |  |  |  |  | 47101 | 12 | 3 | GUP | 3 |
| 4229PTR60 |  | F.O.C for L&R traps |  | 3d | 2012-02-01 A | 2012-02-08 A | 4229PTR50, 4229PTR40 | 100% |  | 2012-03-06 | 2012-03-08 |  |  |  |  | 47101 | 13 | 3 | ENP | 3 |
| A1360 |  | MRP for L&R | level of effort | 5d | 2012-02-09 A | 2012-02-19 A | 4229EPI70 SS, 4229EPI70 FF | 100% |  | 2012-03-04 | 2012-03-08 |  |  |  |  |  |  | 3 | ENP | 3 |
| 4229PTR70 |  | P.O for L&R traps |  | 2d | 2012-02-20 A | 2012-02-21 A | 4229PTR40, 4229EPI70 | 100% |  | 2012-03-04 | 2012-03-05 |  |  |  |  | 47101 | 15 | 3 | ENP | 3 |
| 4229PTR80 |  | L.C issued by Gupco |  | 5d | 2012-02-22 A | 2012-06-03 | 4229PTR70 | 80% | 1d | 2012-03-04 | 2012-03-08 | 140d | 0d |  |  | 47101 |  | 3 | GUP | 3 |
| 4229PTR90 |  | Fabrication upto R.F.S |  | 161d | 2012-02-22 A | 2012-10-16 | 4229PTR80, 4229PTR70 | 24% | 123d | 2012-03-05 | 2012-08-12 | 198d | 0d |  | SUPPLIER | 47101 | 16 | 3 | ENP | 3 |
| 4229PTR100 |  | Delivery upto site |  | 7d | 2012-10-17 | 2012-10-23 | 4229PTR90 |  |  |  |  | 340d | 141d |  | calendar | 47101 | 21 | 3 | ENP | 3 |

| ID | WBS | Activity | Type | Duration | Start | Finish | Predecessors | Complete | Remaining | Planned start | Planned finish | Total float | Free float | Calendar | Global Commodity Code | Global Activity Code | Work Package | Resp. | Phase-1 |
| --- | --- | --- | --- | --- | --- | --- | --- | --- | --- | --- | --- | --- | --- | --- | --- | --- | --- | --- | --- |
|  | 12 | **Instrument electrical bulk** |  |  | 2012-02-29 | 2012-11-26 |  |  |  |  |  |  |  |  |  |  |  |  |  |
| 4229PIB1000 |  | Issue RFQ for Instrument electrical bulk |  | 1d | 2012-02-29 A | 2012-03-04 A | 4229EIN230, 4229GM10 FS+1d | 100% |  | 2012-02-13 | 2012-02-13 |  |  |  | 29201 | 03 | 3 | ENP | 3 |
| 4229PIB1010 |  | Bidding for Instrument electrical bulk |  | 25d | 2012-03-05 A | 2012-03-26 A | 4229PIB1000 | 100% |  | 2012-03-31 | 2012-04-24 |  |  | SUPPLIER | 29201 | 04 | 3 | ENP | 3 |
| A1300 |  | T.E.R for Instrument electrical bulk | level of effort | 15d | 2012-03-26 A | 2012-06-03 | 4229EIN360 FF, 4229EIN360 SS | 93% | 1d | 2012-04-25 | 2012-05-15 | 216d | 0d |  |  |  | 3 | ENP | 3 |
| 4229PIB1020 |  | Receive revised commercial offers |  | 5d | 2012-06-04 | 2012-06-10 | 4229EIN360 |  |  |  |  | 216d | 0d |  | 29201 | 10 | 3 | ENP | 3 |
| 4229PIB1030 |  | commercial evaluation & bid committee for Instrument electrical bulk |  | 10d | 2012-06-11 | 2012-06-24 | 4229EIN360, 4229PIB1020 |  |  |  |  | 216d | 0d |  | 29201 | 11 | 3 | ENP | 3 |
| 4229PIB1040 |  | Client approval on bid committee reccomendation |  | 2d | 2012-06-25 | 2012-06-26 | 4229PIB1030 |  |  |  |  | 216d | 0d |  | 29201 | 12 | 3 | GUP | 3 |
| 4229PIB1050 |  | F.O.C for Instrument electrical bulk |  | 3d | 2012-06-27 | 2012-07-01 | 4229PIB1040, 4229PIB1030 |  |  |  |  | 216d | 0d |  | 29201 | 13 | 3 | ENP | 3 |
| A1520 |  | MRP for Instrument electrical bulk | level of effort | 5d | 2012-07-02 | 2012-07-08 | 4229EIN380 FF, 4229EIN380 SS |  |  |  |  | 216d | 0d |  |  |  | 3 | ENP | 3 |
| 4229PIB1060 |  | P.O for Instrument electrical bulk |  | 2d | 2012-07-09 | 2012-07-10 | 4229EIN380 |  |  |  |  | 216d | 0d |  | 29201 | 15 | 3 | ENP | 3 |
| 4229PIB1070 |  | L.C issued by Gupco |  | 5d | 2012-07-11 | 2012-07-17 | 4229PIB1060 |  |  |  |  | 216d | 0d |  | 29201 |  | 3 | GUP | 3 |
| 4229PIB1080 |  | Fabrication upto R.F.S |  | 90d | 2012-07-18 | 2012-10-27 | 4229PIB1070, 4229PIB1060 |  |  |  |  | 304d | 0d | SUPPLIER | 29201 | 16 | 3 | ENP | 3 |
| 4229PIB1090 |  | Delivery upto site |  | 30d | 2012-10-28 | 2012-11-26 | 4229PIB1080 |  |  |  |  | 306d | 53d | calendar | 29201 | 21 | 3 | ENP | 3 |
|  | 14 | **Instrument mechanical bulk** |  |  | 2012-01-25 | 2012-05-31 |  |  |  |  |  |  |  |  |  |  |  |  |  |
| 4229PIB10 |  | Issue RFQ for Instrument mechanical bulk |  | 2d | 2012-01-25 A | 2012-02-21 A | 4229EIN180, 4229GM10 FS+1d | 100% |  | 2012-02-13 | 2012-02-14 |  |  |  | 29101 | 03 | 3 | ENP | 3 |
| 4229PIB20 |  | Bidding for Instrument mechanical bulk |  | 18d | 2012-02-22 A | 2012-03-29 A | 4229PIB10 | 100% |  | 2012-03-03 | 2012-03-20 |  |  | SUPPLIER | 29101 | 04 | 3 | ENP | 3 |
| A1250 |  | T.E.R for Instrument Mechanical bulk | level of effort | 15d | 2012-03-27 A | 2012-03-27 A | 4229EIN340 SS, 4229EIN340 FF | 100% |  | 2012-04-01 | 2012-04-19 |  |  |  |  |  | 3 | ENP | 3 |
| 4229PIB30 |  | Receive revised commercial offers |  | 5d | 2012-05-30 A | 2012-05-30 A | 4229EIN340 | 100% |  | 2012-06-03 | 2012-06-07 |  |  |  | 29101 | 10 | 3 | ENP | 3 |
| 4229PIB100 |  | Delivery upto site |  | 35d | 2012-05-31 A | 2012-05-31 A | 4229PIB90 | 100% |  | 2012-10-20 | 2012-11-23 |  |  | calendar | 29101 | 21 | 3 | ENP | 3 |
| 4229PIB40 |  | commercial evaluation & bid committee for Instrument mechanical bulk |  | 10d | 2012-05-31 A | 2012-05-31 A | 4229EIN340, 4229PIB30 | 100% |  | 2012-06-10 | 2012-06-21 |  |  |  | 29101 | 11 | 3 | ENP | 3 |
| 4229PIB50 |  | Client approval on bid committee reccommendation |  | 2d | 2012-05-31 A | 2012-05-31 A | 4229PIB40 | 100% |  | 2012-06-24 | 2012-06-25 |  |  |  | 29101 | 12 | 3 | GUP | 3 |
| 4229PIB60 |  | F.O.C for Instrument mechanical bulk |  | 3d | 2012-05-31 A | 2012-05-31 A | 4229PIB40, 4229PIB50 | 100% |  | 2012-06-26 | 2012-06-28 |  |  |  | 29101 | 13 | 3 | ENP | 3 |
| 4229PIB70 |  | P.O for Instrument mechanical bulk |  | 2d | 2012-05-31 A | 2012-05-31 A | 4229EIN370 | 100% |  | 2012-07-01 | 2012-07-02 |  |  |  | 29101 | 15 | 3 | ENP | 3 |
| 4229PIB80 |  | L.C issued by Gupco |  | 5d | 2012-05-31 A | 2012-05-31 A | 4229PIB70 | 100% |  | 2012-07-03 | 2012-07-09 |  |  |  | 29101 |  | 3 | GUP | 3 |
| 4229PIB90 |  | Fabrication upto R.F.S |  | 90d | 2012-05-31 A | 2012-05-31 A | 4229PIB70, 4229PIB80 | 100% |  | 2012-07-10 | 2012-10-19 |  |  | SUPPLIER | 29101 | 16 | 3 | ENP | 3 |
| A1510 |  | MRP for Instrument Mechanical bulk | level of effort | 1d | 2012-05-31 A | 2012-05-31 A | 4229EIN370 SS, 4229EIN370 FF | 100% |  |  |  |  |  |  |  |  | 3 | ENP | 3 |

| ID | WBS | Activity | Type | Duration | Start | Finish | Predecessors | Complete | Remaining | Planned start | Planned finish | Total float | Free float | Expected finish | Calendar | Global Commodity Code | Global Activity Code | Work Package | Resp. | Phase-1 |
| --- | --- | --- | --- | --- | --- | --- | --- | --- | --- | --- | --- | --- | --- | --- | --- | --- | --- | --- | --- | --- |
|  | 15 | **Field instrument** |  |  | 2011-12-13 | 2012-12-23 |  |  |  |  |  |  |  |  |  |  |  |  |  |  |
| 4229PFI10 |  | Issue RFQ for Field Instrument |  | 1d | 2011-12-13 A | 2011-12-14 A | 4229GM10 FS+1d, 4229EIN90 | 100% |  | 2012-01-01 | 2012-01-01 |  |  |  |  | 21001 | 03 | 3 | ENP | 3 |
| 4229PFI20 |  | Bidding for field Instrument |  | 21d | 2011-12-15 A | 2012-01-12 A | 4229PFI10 | 100% |  | 2011-12-31 | 2012-01-28 |  |  |  | SUPPLIER | 21001 | 04 | 3 | ENP | 3 |
| A1260 |  | T.E.R for field Instrument | level of effort | 10d | 2012-01-17 A | 2012-05-02 A | 4229EIN250 FF, 4229EIN250 SS | 100% |  | 2012-01-17 | 2012-01-31 |  |  |  |  |  |  | 3 | ENP | 3 |
| 4229PFI30 |  | Receive revised commercial offers |  | 5d | 2012-05-03 A | 2012-06-03 | 4229EIN250 | 100% | 0d | 2012-04-29 | 2012-05-03 | 197d | 0d | 2012-05-10 |  | 21001 | 10 | 3 | ENP | 3 |
| 4229PFI40 |  | commercial evaluation & bid committee for field Instrument |  | 10d | 2012-06-03 | 2012-06-14 | 4229EIN250, 4229PFI30 |  |  |  |  | 197d | 0d |  |  | 21001 | 11 | 3 | ENP | 3 |
| 4229PFI50 |  | Client approval on bid committee reccomendation |  | 2d | 2012-06-17 | 2012-06-18 | 4229PFI40 |  |  |  |  | 197d | 0d |  |  | 21001 | 12 | 3 | GUP | 3 |
| 4229PFI60 |  | F.O.C for field Instrument |  | 3d | 2012-06-19 | 2012-06-21 | 4229PFI50, 4229PFI40 |  |  |  |  | 197d | 0d |  |  | 21001 | 13 | 3 | ENP | 3 |
| A1500 |  | MRP for field Instrument | level of effort | 5d | 2012-06-24 | 2012-06-28 | 4229EIN350 SS, 4229EIN350 FF |  |  |  |  | 197d | 0d |  |  |  |  | 3 | ENP | 3 |
| 4229PFI70 |  | P.O for field Instrument |  | 2d | 2012-07-01 | 2012-07-02 | 4229EIN350 |  |  |  |  | 197d | 0d |  |  | 21001 | 15 | 3 | ENP | 3 |
| 4229PFI80 |  | L.C issued by Gupco |  | 5d | 2012-07-03 | 2012-07-09 | 4229PFI70 |  |  |  |  | 197d | 0d |  |  | 21001 |  | 3 | GUP | 3 |
| 4229PFI90 |  | Fabrication upto R.F.S |  | 120d | 2012-07-10 | 2012-11-18 | 4229PFI80, 4229PFI70 |  |  |  |  | 277d | 0d |  | SUPPLIER | 21001 | 16 | 3 | ENP | 3 |
| 4229PFI100 |  | Delivery upto site |  | 35d | 2012-11-19 | 2012-12-23 | 4229PFI90 |  |  |  |  | 279d | 26d |  | calendar | 21001 | 21 | 3 | ENP | 3 |
|  | 16 | **Choke valves** |  |  | 2011-11-24 | 2012-10-30 |  |  |  |  |  |  |  |  |  |  |  |  |  |  |
| 4229PCV10 |  | Issue RFQ for Choke valves |  | 2d | 2011-11-24 A | 2011-11-24 A | 4229GM10 FS+1d, 4229EIN40 | 100% |  | 2011-12-04 | 2011-12-05 |  |  |  |  | 23406 | 03 | 3 | ENP | 3 |
| 4229PCV20 |  | Bidding for Choke valves |  | 30d | 2011-11-25 A | 2011-12-26 A | 4229PCV10 | 100% |  | 2011-12-06 | 2012-01-16 |  |  |  | SUPPLIER | 23406 | 04 | 3 | ENP | 3 |
| A1280 |  | T.E.R for choke valves | level of effort | 20d | 2011-12-27 A | 2012-04-02 A | 4229EIN170 SS, 4229EIN170 FF | 100% |  | 2012-01-01 | 2012-01-29 |  |  |  |  |  |  | 3 | ENP | 3 |
| 4229PCV30 |  | Receive revised commercial offers |  | 5d | 2012-04-10 A | 2012-04-26 A | 4229EIN170 | 100% |  | 2012-04-01 | 2012-04-05 |  |  |  |  | 23406 | 10 | 3 | ENP | 3 |
| 4229PCV40 |  | commercial evaluation & bid committee for Choke valves |  | 10d | 2012-04-29 A | 2012-05-13 A | 4229EIN170, 4229PCV30 | 100% |  | 2012-04-29 | 2012-05-10 |  |  |  |  | 23406 | 11 | 3 | ENP | 3 |
| 4229PCV50 |  | Client approval on bid committee reccomendation |  | 2d | 2012-05-13 A | 2012-05-17 A | 4229PCV40 | 100% |  | 2012-05-13 | 2012-05-14 |  |  |  |  | 23406 | 12 | 3 | GUP | 3 |
| 4229PCV60 |  | F.O.C for Choke valves |  | 3d | 2012-05-17 A | 2012-06-03 | 4229PCV50 | 100% | 0d | 2012-04-29 | 2012-05-01 | 156d | 0d | 2012-05-31 |  | 23406 | 13 | 3 | ENP | 3 |
| A1480 |  | MRP for Choke valves | level of effort | 5d | 2012-05-27 A | 2012-06-04 | 4229EIN290 FF, 4229EIN290 SS | 60% | 2d | 2012-06-03 | 2012-06-07 | 213d | 0d |  |  |  |  | 3 | ENP | 3 |
| 4229PCV70 |  | P.O for Choke valves |  | 5d | 2012-06-05 | 2012-06-11 | 4229EIN290, 4229PCV60 |  |  |  |  | 213d | 0d |  |  | 23406 | 15 | 3 | ENP | 3 |
| 4229PCV80 |  | L.C issued by Gupco |  | 5d | 2012-06-12 | 2012-06-18 | 4229PCV70 |  |  |  |  | 213d | 0d |  |  | 23406 |  | 3 | GUP | 3 |
| 4229PCV90 |  | Fabrication upto R.F.S |  | 87d | 2012-06-19 | 2012-09-25 | 4229PCV70, 4229PCV80 |  |  |  |  | 299d | 0d | 2012-09-25 | SUPPLIER | 23406 | 16 | 3 | ENP | 3 |
| 4229PCV100 |  | Delivery upto site |  | 35d | 2012-09-26 | 2012-10-30 | 4229PCV90 |  |  |  |  | 333d | 134d |  | calendar | 23406 | 21 | 3 | ENP | 3 |

| ID | WBS | Activity | Type | Duration | Start | Finish | Predecessors | Complete | Remaining | Planned start | Planned finish | Total float | Free float | Expected finish | Calendar | Global Commodity Code | Global Activity Code | Work Package | Resp. | Phase-1 |
| --- | --- | --- | --- | --- | --- | --- | --- | --- | --- | --- | --- | --- | --- | --- | --- | --- | --- | --- | --- | --- |
|  | 17 | **Pressure regulator valves** |  |  | 2011-10-06 | 2012-12-19 |  |  |  |  |  |  |  |  |  |  |  |  |  |  |
| 4229PRV10 |  | Issue RFQ for pressure regulator valves |  | 2d | 2011-10-06 A | 2011-10-09 A | 4229GM10 FS+1d, 4229EIN30 | 100% |  | 2011-10-09 | 2011-10-11 |  |  |  |  | 21204 | 03 | 3 | ENP | 3 |
| 4229PRV20 |  | Bidding for pressure regulator valves |  | 31d | 2011-10-10 A | 2012-02-01 A | 4229PRV10 | 100% |  | 2011-10-11 | 2011-11-11 |  |  |  | SUPPLIER | 21204 | 04 | 3 | ENP | 3 |
| A1290 |  | T.E.R for Pressure regulator valves | level of effort | 15d | 2012-02-02 A | 2012-04-03 A | 4229EIN160 FF, 4229EIN160 SS | 100% |  | 2012-03-08 | 2012-03-28 |  |  |  |  |  |  | 3 | ENP | 3 |
| 4229PRV30 |  | Receive revised commercial offers |  | 5d | 2012-04-04 A | 2012-04-15 A | 4229EIN160 | 100% |  | 2012-04-01 | 2012-04-05 |  |  |  |  | 21204 | 10 | 3 | ENP | 3 |
| 4229PRV40 |  | Commercial evaluation & bid committee for pressure regulator valves |  | 10d | 2012-04-17 A | 2012-05-10 A | 4229EIN160, 4229PRV30 | 100% |  | 2012-04-29 | 2012-05-10 |  |  |  |  | 21204 | 11 | 3 | ENP | 3 |
| 4229PRV50 |  | Client approval on bid committee reccommendation |  | 2d | 2012-05-13 A | 2012-05-14 A | 4229PRV40 | 100% |  |  |  |  |  |  |  | 21204 | 12 | 3 | GUP | 3 |
| 4229PRV60 |  | F.O.C for pressure regulator valves |  | 2d | 2012-05-15 A | 2012-06-03 | 4229PRV40, 4229PRV50 | 100% | 0d | 2012-05-15 | 2012-05-16 | 151d | 0d | 2012-05-31 |  | 21204 | 13 | 3 | ENP | 3 |
| A1470 |  | MRP for pressure regulator valves | level of effort | 5d | 2012-05-27 A | 2012-06-05 | 4229EIN320 FF, 4229EIN320 SS | 40% | 3d | 2012-06-03 | 2012-06-07 | 151d | 0d |  |  |  |  | 3 | ENP | 3 |
| 4229PRV70 |  | P.O for pressure regulator valves |  | 2d | 2012-06-06 | 2012-06-07 | 4229EIN320 |  |  |  |  | 151d | 0d |  |  | 21204 | 15 | 3 | ENP | 3 |
| 4229PRV90 |  | Fabrication upto R.F.S |  | 153d | 2012-06-08 | 2012-11-19 | 4229PRV70 |  |  |  |  | 215d | 0d | 2012-11-19 | SUPPLIER | 21204 | 16 | 3 | ENP | 3 |
| 4229PRV80 |  | L.C issued by Gupco |  | 3d | 2012-06-10 | 2012-06-12 | 4229PRV70 |  |  |  |  | 327d |  |  |  | 21204 |  | 3 | GUP | 3 |
| 4229PRV100 |  | Delivery upto site |  | 30d | 2012-11-20 | 2012-12-19 | 4229PRV90 |  |  |  |  | 283d | 30d |  | calendar | 21204 | 21 | 3 | ENP | 3 |
|  | 23 | **shutdown valves** |  |  | 2011-10-27 | 2012-12-16 |  |  |  |  |  |  |  |  |  |  |  |  |  |  |
| 4229POV10 |  | Issue RFQ for SDV |  | 2d | 2011-10-27 A | 2011-10-27 A | 4229EIN50 | 100% |  | 2011-10-20 | 2011-10-23 |  |  |  |  | 23402 | 03 | 3 | ENP | 3 |
| 4229POV20 |  | Bidding for SDV |  | 30d | 2011-10-28 A | 2011-11-27 A | 4229POV10 | 100% |  | 2011-11-01 | 2011-11-30 |  |  |  | SUPPLIER | 23402 | 04 | 3 | ENP | 3 |
| A1270 |  | T.E.R for SDV | level of effort | 20d | 2011-11-28 A | 2012-02-01 A | 4229EIN220 FF, 4229EIN220 SS | 100% |  | 2011-12-04 | 2011-12-29 |  |  |  |  |  |  | 3 | ENP | 3 |
| 4229POV30 |  | Receive revised commercial offers |  | 5d | 2012-02-02 A | 2012-02-16 A | 4229EIN220 | 100% |  | 2012-03-08 | 2012-03-14 |  |  |  |  | 23402 | 10 | 3 | ENP | 3 |
| 4229POV40 |  | Commercial evaluation & bid committee for SDV |  | 10d | 2012-02-16 A | 2012-02-19 A |  | 100% |  | 2012-03-15 | 2012-03-28 |  |  |  |  | 23402 | 11 | 3 | ENP | 3 |
| 4229POV50 |  | Client approval on bid committee reccommendation |  | 2d | 2012-03-05 A | 2012-03-28 A | 4229POV40 | 100% |  | 2012-04-03 | 2012-04-04 |  |  |  |  | 23402 | 12 | 3 | GUP | 3 |
| 4229POV60 |  | F.O.C for SDV |  | 2d | 2012-03-29 A | 2012-04-22 A | 4229POV50, 4229POV40 | 100% |  | 2012-04-01 | 2012-04-02 |  |  |  |  | 23402 | 13 | 3 | ENP | 3 |
| A1490 |  | MRP for SDV | level of effort | 5d | 2012-04-22 A | 2012-04-26 A | 4229EIN330 FF, 4229EIN330 SS | 100% |  | 2012-04-29 | 2012-05-03 |  |  |  |  |  |  | 3 | ENP | 3 |
| 4229POV70 |  | P.O for SDV |  | 2d | 2012-04-29 A | 2012-04-29 A | 4229EIN330 | 100% |  | 2012-04-29 | 2012-04-30 |  |  |  |  | 23402 | 15 | 3 | ENP | 3 |
| 4229POV90 |  | Fabrication upto R.F.S |  | 181d | 2012-04-30 A | 2012-11-16 | 4229POV80, 4229POV70 | 17% | 150d | 2012-05-08 | 2012-11-16 | 215d | 0d | 2012-11-16 | SUPPLIER | 23402 | 16 | 3 | ENP | 3 |
| 4229POV80 |  | L.C issued by Gupco |  | 5d | 2012-06-03 | 2012-06-07 | 4229POV70 |  |  |  |  | 151d | 0d |  |  |  |  | 3 | GUP | 3 |
| 4229POV100 |  | Delivery upto site |  | 30d | 2012-11-17 | 2012-12-16 | 4229POV90 |  |  |  |  | 284d | 31d |  | SUPPLIER | 23402 | 21 | 3 | ENP | 3 |

| ID | WBS | Activity | Type | Duration | Start | Finish | Predecessors | Complete | Remaining | Planned start | Planned finish | Total float | Free float | Expected finish | Calendar | Global Commodity Code | Global Activity Code | Work Package | Resp. | Phase-1 |
| --- | --- | --- | --- | --- | --- | --- | --- | --- | --- | --- | --- | --- | --- | --- | --- | --- | --- | --- | --- | --- |
|  | 34 | **Additonal shutdown valves** |  |  | 2012-05-01 | 2013-02-12 |  |  |  |  |  |  |  |  |  |  |  |  |  |  |
| 4229PFV110 |  | Bidding for SDV |  | 30d | 2012-05-01 A | 2012-06-02 | 4229PFV100 | 100% | 0d | 2012-05-01 | 2012-05-30 | 227d | 0d | 2012-05-20 | SUPPLIER | 23409 | 04 | 3 | ENP | 3 |
| 4229PFV100 |  | Issue RFQ for SDV |  | 2d | 2012-05-06 A | 2012-05-07 A | 4229EIN600 | 100% |  | 2012-04-29 | 2012-04-30 |  |  |  |  | 23409 | 03 | 3 | ENP | 3 |
| 4229PFV120 |  | T.E.R for SDV | level of effort | 10d | 2012-05-27 A | 2012-06-20 | 4229EIN610 SS, 4229EIN610 FF |  | 14d | 2012-05-27 | 2012-06-07 | 160d | 0d |  |  |  |  | 3 | ENP | 3 |
| 4229PFV130 |  | Receive revised commercial offers |  | 5d | 2012-06-21 | 2012-06-27 | 4229EIN610 |  |  |  |  | 160d | 0d |  |  | 23409 | 10 | 3 | ENP | 3 |
| 4229PFV140 |  | Commercial evaluation & bid committee for SDV |  | 10d | 2012-06-28 | 2012-07-11 | 4229PFV130 |  |  |  |  | 160d | 0d |  |  | 23409 | 11 | 3 | ENP | 3 |
| 4229PFV150 |  | Client approval on bid committee reccommendation |  | 2d | 2012-07-12 | 2012-07-15 | 4229PFV140 |  |  |  |  | 160d | 0d |  |  | 23409 | 12 | 0 | GUP | 3 |
| 4229PFV160 |  | F.O.C for SDV |  | 2d | 2012-07-16 | 2012-07-17 | 4229PFV150, 4229PFV140 |  |  |  |  | 160d | 0d |  |  | 23409 | 13 | 3 | ENP | 3 |
| 4229PFV170 |  | MRP for SDV | level of effort | 5d | 2012-07-18 | 2012-07-24 | 4229EIN620 SS, 4229EIN620 FF |  |  |  |  | 290d | 0d |  |  |  |  | 3 | ENP | 3 |
| 4229PFV200 |  | Fabrication upto R.F.S |  | 168d | 2012-07-18 | 2013-01-13 | 4229PFV160 |  |  |  |  | 226d | 0d |  | SUPPLIER | 23409 | 16 | 3 | ENP | 3 |
| 4229PFV180 |  | P.O for SDV |  | 2d | 2012-07-25 | 2012-07-26 | 4229EIN620 |  |  |  |  | 290d | 0d |  |  | 23409 | 15 | 3 | ENP | 3 |
| 4229PFV190 |  | L.C issued by Gupco |  | 5d | 2012-07-29 | 2012-08-02 | 4229PFV180 |  |  |  |  | 290d |  |  |  | 23409 |  | 3 | GUP | 3 |
| 4229PFV210 |  | Delivery upto site |  | 30d | 2013-01-14 | 2013-02-12 | 4229PFV200 |  |  |  |  | 226d | 0d |  | SUPPLIER | 23409 | 21 | 3 | ENP | 3 |
|  | 18 | **Multiphase flowmeter** |  |  | 2011-10-09 | 2012-11-22 |  |  |  |  |  |  |  |  |  |  |  |  |  |  |
| 4229PMP10 |  | Issue RFQ for MPFM |  | 2d | 2011-10-09 A | 2011-10-09 A | 4229EIN20 | 100% |  | 2011-08-15 | 2011-08-16 |  |  |  |  | 22106 | 03 | 3 | ENP | 3 |
| 4229PMP20 |  | Bidding for MPFM |  | 30d | 2011-10-10 A | 2011-11-13 A | 4229PMP10 | 100% |  | 2011-08-17 | 2011-09-15 |  |  |  | SUPPLIER | 22106 | 04 | 3 | ENP | 3 |
| A1240 |  | T.E.R for MPFM | level of effort | 20d | 2011-11-14 A | 2011-12-21 A | 4229EIN110 SS, 4229EIN110 FF | 100% |  | 2011-12-04 | 2011-12-29 |  |  |  |  |  |  | 3 | ENP | 3 |
| 4229PMP30 |  | Receive revised commercial offers |  | 4d | 2011-12-22 A | 2011-12-25 A | 4229EIN110 | 100% |  | 2011-12-22 | 2011-12-27 |  |  |  |  | 22106 | 10 | 3 | ENP | 3 |
| 4229PMP40 |  | commercial evaluation & bid committee for MPFM |  | 10d | 2011-12-27 A | 2011-12-28 A | 4229PMP30, 4229EIN110 | 100% |  | 2012-01-01 | 2012-01-12 |  |  |  |  | 22106 | 11 | 3 | ENP | 3 |
| 4229PMP50 |  | Client approval on bid committee reccomendation |  | 2d | 2011-12-29 A | 2012-01-31 A | 4229PMP40 | 100% |  | 2012-01-29 | 2012-01-30 |  |  |  |  | 22106 | 12 | 3 | GUP | 3 |
| 4229PMP60 |  | F.O.C for MPFM |  | 3d | 2012-02-01 A | 2012-02-08 A | 4229PMP50, 4229PMP40 | 100% |  | 2012-01-31 | 2012-02-02 |  |  |  |  | 22106 | 13 | 3 | ENP | 3 |
| A1460 |  | MRP for MPFM | level of effort | 5d | 2012-02-09 A | 2012-02-20 A | 4229EIN260 FF, 4229EIN260 SS | 100% |  | 2012-03-04 | 2012-03-08 |  |  |  |  |  |  | 3 | ENP | 3 |
| 4229PMP70 |  | P.O for MPFM |  | 2d | 2012-02-20 A | 2012-02-21 A | 4229EIN260 | 100% |  | 2012-03-04 | 2012-03-05 |  |  |  |  | 22106 | 15 | 3 | ENP | 3 |
| 4229PMP90 |  | Fabrication upto R.F.S |  | 236d | 2012-02-22 A | 2012-10-23 | 4229PMP70 | 44% | 132d | 2012-03-09 | 2012-11-11 | 200d | 0d | 2012-10-23 | SUPPLIER | 22106 | 16 | 3 | ENP | 3 |
| 4229PMP80 |  | L.C issued by Gupco |  | 5d | 2012-06-03 | 2012-06-07 | 4229PMP70 |  |  |  |  | 330d |  |  |  | 22106 |  | 3 | GUP | 3 |
| 4229PMP100 |  | Delivery upto site |  | 30d | 2012-10-24 | 2012-11-22 | 4229PMP90 |  |  |  |  | 308d | 55d |  | SUPPLIER | 22106 | 21 | 3 | ENP | 3 |

| ID | WBS | Activity | Type | Duration | Start | Finish | Predecessors | Complete | Remaining | Planned start | Planned finish | Total float | Free float | Expected finish | Calendar | Global Commodity Code | Global Activity Code | Work Package | Resp. | Phase-1 |
| --- | --- | --- | --- | --- | --- | --- | --- | --- | --- | --- | --- | --- | --- | --- | --- | --- | --- | --- | --- | --- |
|  | 19 | **Safe guard system** |  |  | 2011-08-25 | 2012-12-15 |  |  |  |  |  |  |  |  |  |  |  |  |  |  |
| 4229PSG10 |  | Issue RFQ for SGS |  | 2d | 2011-08-25 A | 2011-08-28 A | 4229GM10, 4229EIN10 FS-1d | 100% |  | 2011-08-15 | 2011-08-16 |  |  |  |  | 25211 | 03 | 3 | ENP | 3 |
| 4229PSG20 |  | Bidding for SGS |  | 33d | 2011-08-29 A | 2011-09-26 A | 4229PSG10 | 100% |  | 2011-08-17 | 2011-09-18 |  |  |  | SUPPLIER | 25211 | 04 | 3 | ENP | 3 |
| A1230 |  | T.E.R for SGS | level of effort | 25d | 2011-09-28 A | 2012-01-16 A | 4229EIN80 SS, 4229EIN80 FF | 100% |  | 2011-09-28 | 2011-11-02 |  |  |  |  |  |  | 3 | ENP | 3 |
| 4229PSG30 |  | Receive revised commercial offers |  | 5d | 2012-01-16 A | 2012-01-30 A | 4229EIN80 | 100% |  | 2012-01-10 | 2012-01-16 |  |  |  |  | 25211 | 10 | 3 | ENP | 3 |
| 4229PSG40 |  | commercial evaluation & bid committee for SGS |  | 22d | 2012-02-01 A | 2012-02-29 A | 4229EIN80, 4229PSG30 | 100% |  | 2012-03-06 | 2012-04-04 |  |  |  |  | 25211 | 11 | 3 | ENP | 3 |
| 4229PSG50 |  | Client approval on bid committee reccomendation |  | 2d | 2012-02-29 A | 2012-03-11 A | 4229PSG40 | 100% |  | 2012-03-06 | 2012-03-07 |  |  |  |  | 25211 | 12 | 3 | GUP | 3 |
| A1450 |  | MRP for SGS | level of effort | 5d | 2012-03-08 A | 2012-05-08 A | 4229EIN210 FF, 4229EIN210 SS | 100% |  | 2012-03-08 | 2012-03-14 |  |  |  |  |  |  | 3 | ENP | 3 |
| 4229PSG60 |  | F.O.C for SGS |  | 3d | 2012-03-12 A | 2012-05-06 A | 4229PSG40, 4229PSG50 | 100% |  | 2012-04-29 | 2012-05-01 |  |  |  |  | 25211 | 13 | 3 | ENP | 3 |
| 4229PSG70 |  | P.O for SGS |  | 2d | 2012-05-08 A | 2012-05-27 A | 4229EIN210 | 100% |  | 2012-05-02 | 2012-05-03 |  |  |  |  | 25211 | 15 | 3 | ENP | 3 |
| 4229PSG90 |  | Fabrication upto R.F.S |  | 170d | 2012-05-27 A | 2012-12-06 | 4229PSG80, 4229PSG70 |  | 170d | 2012-05-11 | 2012-11-08 | 215d | 0d | 2012-12-06 | SUPPLIER | 25211 | 16 | 3 | ENP | 3 |
| 4229PSG80 |  | L.C issued by Gupco |  | 5d | 2012-06-03 | 2012-06-07 | 4229PSG70 |  |  |  |  | 151d | 0d |  |  | 25211 |  | 3 | GUP | 3 |
| 4229PSG100 |  | Delivery upto site |  | 9d | 2012-12-07 | 2012-12-15 | 4229PSG90 |  |  |  |  | 287d | 34d |  | calendar | 25211 | 21 | 3 | ENP | 3 |
|  | 4 | **Radar System** |  |  | 2011-11-30 | 2013-01-16 |  |  |  |  |  |  |  |  |  |  |  |  |  |  |
| 4229PRS10 |  | Issue RFQ for Radar system |  | 2d | 2011-11-30 A | 2011-11-30 A | 4229ETE80 | 100% |  | 2011-12-04 | 2011-12-05 |  |  |  |  | 28601 | 03 | 3 | ENP | 3 |
| 4229PRS20 |  | Bidding for Radar system |  | 15d | 2011-12-01 A | 2012-06-30 | 4229PRS10 |  | 29d | 2011-12-06 | 2011-12-20 | 2d | 0d | 2012-06-30 | SUPPLIER | 28601 | 04 | 3 | ENP | 3 |
| A1180 |  | T.E.R for Radar System | level of effort | 23d | 2012-07-03 | 2012-08-02 | 4229ETE170 FF, 4229ETE170 SS |  |  |  |  | 272d | 0d |  |  |  |  | 3 | ENP | 3 |
| 4229PRS30 |  | Receive revised commercial offers |  | 3d | 2012-08-05 | 2012-08-07 | 4229ETE170 |  |  |  |  | 174d | 0d |  |  | 28601 | 10 | 3 | ENP | 3 |
| 4229PRS40 |  | commercial evaluation & bid committee for Radar system |  | 10d | 2012-08-08 | 2012-08-28 | 4229PRS30 |  |  |  |  | 174d | 0d |  |  | 28601 | 11 | 3 | ENP | 3 |
| 4229PRS50 |  | Client approval on bid committee reccomendation |  | 2d | 2012-08-29 | 2012-08-30 | 4229PRS40 |  |  |  |  | 174d | 0d |  |  | 28601 | 12 | 3 | GUP | 3 |
| 4229PRS60 |  | F.O.C for Radar system |  | 3d | 2012-09-02 | 2012-09-04 | 4229PRS40, 4229PRS50 |  |  |  |  | 174d | 0d |  |  | 28601 | 13 | 3 | ENP | 3 |
| A1530 |  | MRP for Radar System | level of effort | 5d | 2012-09-05 | 2012-09-11 | 4229ETE90 SS, 4229ETE90 FF |  |  |  |  | 174d | 0d |  |  |  |  | 3 | ENP | 3 |
| 4229PRS70 |  | P.O for Radar system |  | 2d | 2012-09-12 | 2012-09-13 | 4229ETE90 |  |  |  |  | 174d | 0d |  |  | 28601 | 15 | 3 | ENP | 3 |
| 4229PRS80 |  | L.C issued by Gupco |  | 5d | 2012-09-16 | 2012-09-20 | 4229PRS70 |  |  |  |  | 174d | 0d |  |  | 28601 |  | 3 | GUP | 3 |
| 4229PRS90 |  | Fabrication upto R.F.S |  | 90d | 2012-09-21 | 2012-12-19 | 4229PRS80, 4229PRS70 |  |  |  |  | 251d | 0d |  | SUPPLIER | 28601 | 16 | 3 | ENP | 3 |
| 4229PRS100 |  | Delivery upto site |  | 30d | 2012-12-20 | 2013-01-16 | 4229PRS90 |  |  |  |  | 253d | 0d |  | calendar | 28601 | 21 | 3 | ENP | 3 |

| ID | WBS | Activity | Type | Duration | Start | Finish | Predecessors | Complete | Remaining | Planned start | Planned finish | Total float | Free float | Expected finish | Calendar | Global Commodity Code | Global Activity Code | Work Package | Resp. | Phase-1 |
| --- | --- | --- | --- | --- | --- | --- | --- | --- | --- | --- | --- | --- | --- | --- | --- | --- | --- | --- | --- | --- |
|  | 9 | **Solar power unit** |  |  | 2011-08-23 | 2012-11-09 |  |  |  |  |  |  |  |  |  |  |  |  |  |  |
| 4229PSU10 |  | Issue RFQ for solar power unit |  | 2d | 2011-08-23 A | 2011-08-24 A | 4229EEL10, 4229GM10 | 100% |  | 2011-08-15 | 2011-08-16 |  |  |  |  | 51018 | 03 | 3 | ENP | 3 |
| 4229PSU20 |  | Bidding for solar power unit |  | 49d | 2011-08-25 A | 2011-10-13 A | 4229PSU10 | 100% |  | 2011-08-17 | 2011-10-04 |  |  |  | SUPPLIER | 51018 | 04 | 3 | ENP | 3 |
| A1610 |  | T.ER for solar power unit | level of effort | 15d | 2011-10-13 A | 2012-01-31 A | 4229EEL40 FF, 4229EEL40 SS | 100% |  | 2011-10-02 | 2011-10-23 |  |  |  |  |  |  | 3 | ENP | 3 |
| 4229PSU30 |  | Receive revised commercial offers |  | 5d | 2012-02-01 A | 2012-02-12 A | 4229EEL40 | 100% |  | 2012-03-04 | 2012-03-08 |  |  |  |  | 51018 | 10 | 3 | ENP | 3 |
| 4229PSU40 |  | commercial evaluation & bid committee for solar power unit |  | 15d | 2012-02-13 A | 2012-02-29 A | 4229PSU30, 4229EEL40 | 100% |  | 2012-03-11 | 2012-03-29 |  |  |  |  | 51018 | 11 | 3 | ENP | 3 |
| 4229PSU50 |  | Client approval on bid committee reccomendation |  | 2d | 2012-02-29 A | 2012-03-11 A | 4229PSU40 | 100% |  | 2012-03-06 | 2012-03-07 |  |  |  |  | 51018 | 12 | 3 | GUP | 3 |
| A1420 |  | MRP for solar power unit | level of effort | 5d | 2012-03-08 A | 2012-03-28 A | 4229EEL130 SS, 4229EEL130 FF | 100% |  | 2012-03-08 | 2012-03-14 |  |  |  |  |  |  | 3 | ENP | 3 |
| 4229PSU60 |  | F.O.C for solar power unit |  | 3d | 2012-03-28 A | 2012-03-28 A | 4229PSU40, 4229PSU50 | 100% |  | 2012-04-01 | 2012-04-03 |  |  |  |  | 51018 | 13 | 3 | ENP | 3 |
| 4229PSU70 |  | P.O for solar power unit |  | 5d | 2012-04-01 A | 2012-04-04 A | 4229EEL130 | 100% |  | 2012-04-01 | 2012-04-05 |  |  |  |  | 51018 | 15 | 3 | ENP | 3 |
| 4229PSU90 |  | Fabrication upto R.F.S |  | 175d | 2012-04-05 A | 2012-09-25 | 4229PSU70, 4229PSU80 | 44% | 98d | 2012-04-13 | 2012-10-16 | 194d | 0d | 2012-09-25 | SUPPLIER | 51018 | 16 | 3 | ENP | 3 |
| 4229PSU80 |  | L.C issued by Gupco |  | 5d | 2012-06-03 | 2012-06-07 | 4229PSU70 |  |  |  |  | 136d | 0d |  |  | 51018 |  | 3 | GUP | 3 |
| 4229PSU100 |  | Delivery upto site |  | 45d | 2012-09-26 | 2012-11-09 | 4229PSU90 |  |  |  |  | 323d | 70d |  | calendar | 51018 | 21 | 3 | ENP | 3 |
|  | 10 | **Navigation aids** |  |  | 2011-09-18 | 2012-08-15 |  |  |  |  |  |  |  |  |  |  |  |  |  |  |
| 4229PNA10 |  | Issue RFQ for Navigation aids |  | 2d | 2011-09-18 A | 2011-09-18 A | 4229EEL30, 4229GM10 | 100% |  | 2011-08-15 | 2011-08-16 |  |  |  |  | 51010 | 03 | 3 | ENP | 3 |
| 4229PNA20 |  | Bidding for Navigation aids |  | 61d | 2011-09-19 A | 2011-10-16 A | 4229PNA10 | 100% |  | 2011-08-17 | 2011-10-16 |  |  |  | SUPPLIER | 51010 | 04 | 3 | ENP | 3 |
| 4229EEL320 |  | T.E.R for Navigation aids | level of effort | 15d | 2011-10-17 A | 2011-12-07 A | 4229EEL60 FF, 4229EEL60 SS | 100% |  | 2011-10-17 | 2011-11-13 |  |  |  |  |  |  | 3 | ENP | 3 |
| 4229PNA30 |  | Receive revised commercial offers |  | 5d | 2011-12-08 A | 2011-12-13 A | 4229EEL60 | 100% |  | 2011-12-08 | 2011-12-14 |  |  |  |  | 51010 | 10 | 3 | ENP | 3 |
| 4229PNA50 |  | Client approval on bid committee reccomendation |  | 2d | 2011-12-13 A | 2012-01-11 A | 4229PNA40 | 100% |  | 2011-12-13 | 2011-12-14 |  |  |  |  | 51010 | 12 | 3 | GUP | 3 |
| 4229PNA40 |  | commercial evaluation & bid committee for Navigation aids |  | 10d | 2011-12-14 A | 2011-12-21 A | 4229EEL60, 4229PNA30 | 100% |  | 2011-12-15 | 2011-12-28 |  |  |  |  | 51010 | 11 | 3 | ENP | 3 |
| 4229PNA60 |  | F.O.C for Navigation aids |  | 3d | 2012-01-11 A | 2012-01-12 A | 4229PNA40, 4229PNA50 | 100% |  | 2012-01-11 | 2012-01-15 |  |  |  |  | 51010 | 13 | 3 | ENP | 3 |
| A1430 |  | MRP for Navigation aids | level of effort | 4d | 2012-01-12 A | 2012-01-18 A | 4229EEL150 FF, 4229EEL150 SS | 100% |  | 2012-01-12 | 2012-01-17 |  |  |  |  |  |  | 3 | ENP | 3 |
| 4229PNA70 |  | P.O for Navigation aids |  | 5d | 2012-01-19 A | 2012-02-01 A | 4229EEL150 | 100% |  | 2012-01-19 | 2012-01-26 |  |  |  |  | 51010 | 15 | 3 | ENP | 3 |
| 4229PNA90 |  | Fabrication upto R.F.S |  | 130d | 2012-02-01 A | 2012-07-01 | 4229PNA70, 4229PNA80 | 82% | 24d | 2012-04-06 | 2012-08-13 | 215d | 0d | 2012-07-01 | SUPPLIER | 51010 | 16 | 3 | ENP | 3 |
| 4229PNA80 |  | L.C issued by Gupco |  | 5d | 2012-06-03 | 2012-06-07 | 4229PNA70 |  |  |  |  | 151d | 0d |  |  | 51010 |  | 3 | GUP | 3 |
| 4229PNA100 |  | Delivery upto site |  | 45d | 2012-07-02 | 2012-08-15 | 4229PNA90 |  |  |  |  | 409d | 156d |  | calendar | 51010 | 21 | 3 | ENP | 3 |

| ID | WBS | Activity | Type | Duration | Start | Finish | Predecessors | Complete | Remaining | Planned start | Planned finish | Total float | Free float | Calendar | Global Commodity Code | Global Activity Code | Work Package | Resp. | Phase-1 |
| --- | --- | --- | --- | --- | --- | --- | --- | --- | --- | --- | --- | --- | --- | --- | --- | --- | --- | --- | --- |
|  | 11 | **Electrical bulk** |  |  | 2011-12-28 | 2012-12-11 |  |  |  |  |  |  |  |  |  |  |  |  |  |
| 4229PEB10 |  | Issue RFQ for Electrical bulk |  | 2d | 2011-12-28 A | 2011-12-29 A | 4229GM10 FS+1d, 4229EEL140 | 100% |  | 2012-01-11 | 2012-01-12 |  |  |  | 50002 | 03 | 3 | ENP | 3 |
| 4229PEB20 |  | Bidding for Electrical bulk |  | 25d | 2011-12-30 A | 2012-02-01 A | 4229PEB10 | 100% |  | 2012-01-13 | 2012-02-07 |  |  | SUPPLIER | 50002 | 04 | 3 | ENP | 3 |
| 4229EEL310 |  | T.E.R for Electrical bulk | level of effort | 15d | 2012-02-02 A | 2012-06-03 | 4229EEL200 SS, 4229EEL200 FF | 93% | 1d | 2012-03-05 | 2012-03-25 | 205d | 0d |  |  |  | 3 | ENP | 3 |
| 4229PEB30 |  | Receive revised commercial offers |  | 5d | 2012-06-04 | 2012-06-10 | 4229EEL200 |  |  |  |  | 205d | 0d |  | 50002 | 10 | 3 | ENP | 3 |
| 4229PEB40 |  | commercial evaluation & bid committee for Electrical bulk |  | 10d | 2012-06-11 | 2012-06-24 | 4229PEB30, 4229EEL200 |  |  |  |  | 205d | 0d |  | 50002 | 11 | 3 | ENP | 3 |
| 4229PEB50 |  | Client approval on bid committee reccomendation |  | 2d | 2012-06-25 | 2012-06-26 | 4229PEB40 |  |  |  |  | 205d | 0d |  | 50002 | 12 | 3 | GUP | 3 |
| 4229PEB60 |  | F.O.C for Electrical bulk |  | 3d | 2012-06-27 | 2012-07-01 | 4229PEB50, 4229PEB40 |  |  |  |  | 205d | 0d |  | 50002 | 13 | 3 | ENP | 3 |
| A1440 |  | MRP for Electrical bulk | level of effort | 5d | 2012-07-02 | 2012-07-08 | 4229EEL210 SS, 4229EEL210 FF |  |  |  |  | 205d | 0d |  |  |  | 3 | ENP | 3 |
| 4229PEB70 |  | P.O for Electrical bulk |  | 2d | 2012-07-09 | 2012-07-10 | 4229EEL210 |  |  |  |  | 205d | 0d |  | 50002 | 15 | 3 | ENP | 3 |
| 4229PEB80 |  | L.C issued by Gupco |  | 5d | 2012-07-11 | 2012-07-17 | 4229PEB70 |  |  |  |  | 205d | 0d |  | 50002 |  | 3 | GUP | 3 |
| 4229PEB90 |  | Fabrication upto R.F.S |  | 90d | 2012-07-18 | 2012-10-27 | 4229PEB70, 4229PEB80 |  |  |  |  | 289d | 0d | SUPPLIER | 50002 | 16 | 3 | ENP | 3 |
| 4229PEB100 |  | Delivery upto site |  | 45d | 2012-10-28 | 2012-12-11 | 4229PEB90 |  |  |  |  | 291d | 38d | calendar | 50002 | 21 | 3 | ENP | 3 |
|  | 1 | **Cathodic protection** |  |  | 2011-10-26 | 2012-07-22 |  |  |  |  |  |  |  |  |  |  |  |  |  |
| 4229PCP10 |  | Issue RFQ for Cathodic protection |  | 2d | 2011-10-26 A | 2011-10-26 A | 4229EME10 | 100% |  | 2011-10-30 | 2011-10-31 |  |  |  | 18502 | 03 | 3 | ENP | 3 |
| 4229PCP20 |  | Bidding for Cathodic protection |  | 25d | 2011-10-27 A | 2011-11-24 A | 4229PCP10 | 100% |  | 2011-11-17 | 2011-12-11 |  |  | SUPPLIER | 18502 | 04 | 3 | ENP | 3 |
| A1120 |  | T.E.R for cathodic protection | level of effort | 18.88d | 2011-11-24 A | 2011-12-27 A | 4229EME60 FF, 4229EME60 SS | 100% |  | 2011-12-04 | 2011-12-28 |  |  |  |  |  | 4 | ENP | 3 |
| 4229PCP30 |  | Receive revised commercial offers |  | 5d | 2011-12-28 A | 2012-01-15 A | 4229EME60 | 100% |  | 2012-01-01 | 2012-01-05 |  |  |  | 18502 | 10 | 3 | ENP | 3 |
| 4229PCP40 |  | Commercial evaluation & bid committee for Cathodic protection |  | 10d | 2012-01-16 A | 2012-01-23 A | 4229PCP30, 4229EME60 | 100% |  | 2012-01-09 | 2012-01-22 |  |  |  | 18502 | 11 | 3 | ENP | 3 |
| 4229PCP50 |  | Client approval on bid committee reccommendation |  | 2d | 2012-02-09 A | 2012-02-20 A | 4229PCP40 | 100% |  | 2012-03-18 | 2012-03-19 |  |  |  | 18502 | 12 | 3 | GUP | 3 |
| 4229PCP60 |  | F.O.C for Cathodic protection |  | 3d | 2012-02-21 A | 2012-02-26 A | 4229PCP40, 4229PCP50 | 100% |  | 2012-03-20 | 2012-03-22 |  |  |  | 18502 | 13 | 3 | ENP | 3 |
| 4229PCP90 |  | Fabrication upto R.F.S |  | 70d | 2012-02-26 A | 2012-05-28 A | 4229PCP80, 4229PCP70 | 100% |  | 2012-03-14 | 2012-05-22 |  |  | SUPPLIER | 18502 | 16 | 3 | ENP | 3 |
| A1390 |  | MRP for cathodic protection | level of effort | 5d | 2012-02-27 A | 2012-02-28 A | 4229EME100 SS, 4229EME100 FF | 100% |  | 2012-03-04 | 2012-03-08 |  |  |  |  |  | 4 | ENP | 3 |
| 4229PCP70 |  | P.O for Cathodic protection |  | 5d | 2012-02-29 A | 2012-03-01 A | 4229EME100 | 100% |  | 2012-03-04 | 2012-03-08 |  |  |  | 18502 | 15 | 4 | ENP | 3 |
| 4229PCP100 |  | Delivery upto site |  | 45d | 2012-05-29 A | 2012-07-22 | 4229PCP90 |  | 45d | 2012-06-08 | 2012-07-22 | 433d | 234d | calendar | 18502 | 21 | 3 | ENP | 3 |
| 4229PCP80 |  | L.C issued by Gupco |  | 5d | 2012-06-03 | 2012-06-07 | 4229PCP70 |  |  |  |  | 297d | 0d |  | 18502 |  | 3 | GUP | 3 |

| ID | WBS | Activity | Type | Duration | Start | Finish | Predecessors | Complete | Remaining | Planned start | Planned finish | Total float | Free float | Constraint | Expected finish | Calendar | Global Commodity Code | Global Activity Code | Work Package | Resp. | Phase-1 |
| --- | --- | --- | --- | --- | --- | --- | --- | --- | --- | --- | --- | --- | --- | --- | --- | --- | --- | --- | --- | --- | --- |
|  | 20 | **Pressure Vessels** |  |  | 2011-11-17 | 2012-10-12 |  |  |  |  |  |  |  |  |  |  |  |  |  |  |  |
| 4229PVE10 |  | Issue RFQ for pressure vessels |  | 2d | 2011-11-17 A | 2011-11-17 A | 4229EPV20, 4229GM10 | 100% |  | 2011-12-04 | 2011-12-05 |  |  |  |  |  | 11301 | 03 | 3 | ENP | 3 |
| 4229PVE20 |  | Bidding for pressure vessels |  | 30d | 2011-11-18 A | 2011-12-08 A | 4229PVE10 | 100% |  | 2011-12-06 | 2012-01-16 |  |  |  |  | SUPPLIER | 11301 | 04 | 3 | ENP | 3 |
| A1140 |  | T.E.R for pressure vessels | level of effort | 20d | 2011-12-15 A | 2012-02-20 A | 4229EPV40 SS, 4229EPV40 FF | 100% |  | 2011-12-11 | 2012-01-05 |  |  |  |  |  |  |  | 3 | ENP | 3 |
| 4229PVE30 |  | Receive revised commercial offers |  | 5d | 2012-02-21 A | 2012-02-27 A | 4229EPV40 | 100% |  | 2012-03-04 | 2012-03-08 |  |  |  |  |  | 11301 | 10 | 3 | ENP | 3 |
| 4229PVE40 |  | commercial evaluation & bid committee for pressure vessels |  | 10d | 2012-02-28 A | 2012-03-18 A | 4229EPV40, 4229PVE30 | 100% |  | 2012-03-05 | 2012-03-18 |  |  |  |  |  | 11301 | 11 | 3 | ENP | 3 |
| 4229PVE50 |  | Client approval on bid committee reccommendation |  | 2d | 2012-03-19 A | 2012-03-19 A | 4229PVE40 | 100% |  | 2012-04-15 | 2012-04-16 |  |  |  |  |  | 11301 | 12 | 3 | GUP | 3 |
| 4229PVE60 |  | F.O.C for pressure vessels |  | 3d | 2012-03-19 A | 2012-03-20 A | 4229PVE50, 4229PVE40 | 100% |  | 2012-04-17 | 2012-04-19 |  |  |  |  |  | 11301 | 13 | 3 | ENP | 3 |
| A1410 |  | MRP for K.O drum | level of effort | 2d | 2012-03-21 A | 2012-03-25 A | 4229EPV60 SS, 4229EPV60 FF | 100% |  | 2012-03-21 | 2012-03-22 |  |  |  |  |  |  |  | 3 | ENP | 3 |
| 4229PVE70 |  | P.O for pressure vessels |  | 5d | 2012-03-26 A | 2012-04-01 A | 4229EPV60 | 100% |  | 2012-04-01 | 2012-04-05 |  |  |  |  |  | 11301 | 15 | 3 | ENP | 3 |
| 4229PVE90 |  | Fabrication upto R.F.S |  | 182d | 2012-04-01 A | 2012-09-28 | 4229PVE70, 4229PVE80 | 45% | 101d | 2012-04-06 | 2012-10-16 | 215d | 0d |  | 2012-09-28 | SUPPLIER | 11301 | 16 | 3 | ENP | 3 |
| 4229PVE80 |  | L.C issued by Gupco |  | 5d | 2012-06-03 | 2012-06-07 | 4229PVE70 |  |  |  |  | 151d | 0d |  |  |  | 11301 |  | 3 | GUP | 3 |
| 4229PVE100 |  | Delivery upto site |  | 14d | 2012-09-29 | 2012-10-12 | 4229PVE90 |  |  |  |  | 351d | 98d |  |  | calendar | 11301 | 21 | 3 | ENP | 3 |
|  | 21 | **Open drain Tanks (Cancelled)** |  |  | 2011-10-27 | 2012-03-03 |  |  |  |  |  |  |  |  |  |  |  |  |  |  |  |
| 4229PTA10 |  | Issue RFQ for tanks |  | 2d | 2011-10-27 A | 2011-10-27 A | 4229EPV10, 4229GM10 | 100% |  | 2011-11-20 | 2011-11-21 |  |  |  |  |  | 11303 | 03 | 3 | ENP | 3 |
| 4229PTA20 |  | Bidding for tanks |  | 30d | 2011-10-27 A | 2011-11-24 A |  | 100% |  | 2011-11-22 | 2011-12-21 |  |  |  |  | SUPPLIER | 11303 | 04 | 3 | ENP | 3 |
| A1130 |  | T.E.R for tanks | level of effort | 20d | 2011-11-24 A | 2011-12-29 A | 4229EPV30 SS, 4229EPV30 FF | 100% |  | 2011-12-04 | 2011-12-29 |  |  |  |  |  |  |  | 3 | ENP | 3 |
| 4229PTA30 |  | Receive revised commercial offers |  | 5d | 2011-12-29 A | 2012-01-05 A | 4229EPV30 | 100% |  | 2012-01-01 | 2012-01-05 |  |  |  |  |  | 11303 | 10 | 3 | ENP | 3 |
| 4229PTA40 |  | commercial evaluation & bid committee for tanks |  | 10d | 2012-01-08 A | 2012-03-03 A | 4229PTA30, 4229EPV30 | 100% |  | 2012-01-08 | 2012-01-19 |  |  | start on or after 2012-01-08 |  |  | 11303 | 11 | 3 | ENP | 3 |
| A1400 |  | MRP for tanks | level of effort | 5d | 2012-03-01 A | 2012-03-03 A | 4229EPV50 FF, 4229EPV50 SS | 100% |  | 2012-03-18 | 2012-03-22 |  |  |  |  |  |  |  | 3 | ENP | 3 |
| 4229PTA100 |  | Delivery upto site |  | 45d | 2012-03-03 A | 2012-03-03 A | 4229PTA90 | 100% |  | 2012-07-28 | 2012-09-10 |  |  |  |  | calendar | 11303 | 21 | 3 | ENP | 3 |
| 4229PTA50 |  | Client approval on bid committee reccomendation |  | 2d | 2012-03-03 A | 2012-03-03 A | 4229PTA40 | 100% |  | 2012-03-11 | 2012-03-12 |  |  |  |  |  | 11303 | 12 | 3 | GUP | 3 |
| 4229PTA60 |  | F.O.C for tanks |  | 3d | 2012-03-03 A | 2012-03-03 A | 4229PTA40, 4229PTA50 | 100% |  | 2012-03-13 | 2012-03-15 |  |  |  |  |  | 11303 | 13 | 3 | ENP | 3 |
| 4229PTA70 |  | P.O for tanks |  | 5d | 2012-03-03 A | 2012-03-03 A | 4229EPV50 | 100% |  | 2012-03-18 | 2012-03-22 |  |  |  |  |  | 11303 | 15 | 3 | ENP | 3 |
| 4229PTA80 |  | L.C issued by Gupco |  | 5d | 2012-03-03 A | 2012-03-03 A | 4229PTA70 | 100% |  | 2012-03-25 | 2012-03-29 |  |  |  |  |  | 11303 |  | 3 | GUP | 3 |
| 4229PTA90 |  | Fabrication upto R.F.S |  | 120d | 2012-03-03 A | 2012-03-03 A | 4229PTA80, 4229PTA70 | 100% |  | 2012-03-30 | 2012-07-27 |  |  |  |  | SUPPLIER | 11303 | 16 | 3 | ENP | 3 |

| ID | WBS | Activity | Type | Duration | Start | Finish | Predecessors | Complete | Remaining | Planned start | Planned finish | Total float | Free float | Expected finish | Calendar | Global Commodity Code | Global Activity Code | Work Package | Resp. | Phase-1 |
| --- | --- | --- | --- | --- | --- | --- | --- | --- | --- | --- | --- | --- | --- | --- | --- | --- | --- | --- | --- | --- |
|  | 33 | **Progress cavity pump** |  |  | 2012-03-14 | 2013-02-13 |  |  |  |  |  |  |  |  |  |  |  |  |  |  |
| 4229PPC100 |  | Issue RFQ for pump |  | 2d | 2012-03-14 A | 2012-03-20 A | 4229EME170 | 100% |  | 2012-04-29 | 2012-04-30 |  |  |  |  | 13103 | 03 | 3 | ENP | 3 |
| 4229PPC110 |  | Bidding for pump |  | 40d | 2012-03-21 A | 2012-04-28 A | 4229PPC100 | 100% |  | 2012-04-28 | 2012-06-06 |  |  |  | SUPPLIER | 13103 | 04 | 3 | ENP | 3 |
| 4229PPC120 |  | T.E.R for pump | level of effort | 30d | 2012-04-29 A | 2012-06-05 | 4229EME180 SS, 4229EME180 FF | 90% | 3d | 2012-04-29 | 2012-06-07 | 158d | 0d |  |  |  |  | 3 | ENP | 3 |
| 4229PPC130 |  | Receive revised commercial offers for pump |  | 5d | 2012-06-06 | 2012-06-12 | 4229EME180 |  |  |  |  | 158d | 0d |  |  | 13103 | 10 | 3 | ENP | 3 |
| 4229PPC180 |  | commercial evaluation & bid committee for pump |  | 11d | 2012-06-13 | 2012-06-27 | 4229PPC130 |  |  |  |  | 158d | 0d | 2012-06-27 |  | 13103 | 11 | 3 | ENP | 3 |
| 4229PPC160 |  | Client approval on bid committee reccomendation |  | 2d | 2012-06-28 | 2012-07-01 | 4229PPC180 |  |  |  |  | 158d | 0d |  |  | 13103 | 12 | 3 | GUP |  |
| 4229PPC190 |  | F.O.C for pump |  | 3d | 2012-07-02 | 2012-07-04 | 4229PPC160, 4229PPC180 |  |  |  |  | 158d | 0d |  |  | 13103 | 13 | 3 | ENP | 3 |
| 4229PPC140 |  | Fabrication upto R.F.S for pump |  | 168d | 2012-07-05 | 2012-12-31 | 4229PPC190 |  |  |  |  | 224d | 0d |  | SUPPLIER | 13103 | 16 | 3 | ENP | 3 |
| 4229PPC210 |  | MRP for pump | level of effort | 5d | 2012-07-05 | 2012-07-11 | 4229EME200 FF, 4229EME200 SS |  |  |  |  | 296d | 0d |  |  |  |  | 3 | ENP | 3 |
| 4229PPC200 |  | P.O for pump |  | 5d | 2012-07-12 | 2012-07-18 | 4229EME200 |  |  |  |  | 296d | 0d |  |  | 13103 | 15 | 3 | ENP | 3 |
| 4229PPC170 |  | L.C issued by Gupco |  | 5d | 2012-07-19 | 2012-07-25 | 4229PPC200 |  |  |  |  | 296d |  |  |  | 13103 | 12 | 3 | GUP | 3 |
| 4229PPC150 |  | Delivery upto site for pump |  | 45d | 2012-12-31 | 2013-02-13 | 4229PPC140 |  |  |  |  | 225d |  |  | calendar | 13103 | 21 | 3 | ENP | 3 |
|  | 24 | **18" pipeline** |  |  |  |  |  |  |  |  |  |  |  |  |  |  |  |  |  |  |
|  | 5 | **8"pipeline** |  |  | 2011-10-31 | 2012-08-06 |  |  |  |  |  |  |  |  |  |  |  |  |  |  |
| 4229PPL50 |  | Issue RFQ for 8" pipeline |  | 2d | 2011-10-31 A | 2011-10-31 A | 4229EPL560 | 100% |  | 2011-12-04 | 2011-12-05 |  |  |  |  | 61102 | 03 | 3 | ENP | 3 |
| 4229PPL10 |  | Bidding for 8" pipeline |  | 35d | 2011-11-01 A | 2011-11-21 A | 4229PPL50, 4229EPL560 | 100% |  | 2011-12-06 | 2012-01-21 |  |  |  | SUPPLIER | 61102 | 04 | 3 | ENP | 3 |
| A1150 |  | T.E.R for 8"line pipe | level of effort | 28.88d | 2011-11-22 A | 2012-01-08 A | 4229EPL70 SS, 4229EPL70 FF | 100% |  | 2012-01-22 | 2012-03-01 |  |  |  |  |  |  | 4 | ENP | 3 |
| 4229PPL20 |  | Receive revised commercial offers for 8"pipeline |  | 5d | 2012-01-09 A | 2012-01-24 A | 4229EPL70 | 100% |  | 2012-01-09 | 2012-01-15 |  |  |  |  | 61102 | 10 | 4 | ENP | 3 |
| 4229PPL60 |  | commercial evaluation & bid committee for 8"pipeline |  | 10d | 2012-01-25 A | 2012-01-30 A | 4229PPL20 | 100% |  | 2012-03-06 | 2012-03-19 |  |  |  |  | 61102 | 11 | 3 | ENP | 3 |
| 4229PPL70 |  | Client approval on bid committee reccomendation |  | 2d | 2012-02-13 A | 2012-02-19 A | 4229PPL60 | 100% |  | 2012-03-20 | 2012-03-21 |  |  |  |  | 61102 | 12 | 3 | GUP | 3 |
| 4229PPL80 |  | F.O.C for 8" pipeline |  | 3d | 2012-02-21 A | 2012-02-26 A | 4229PPL70, 4229PPL60 | 100% |  | 2012-03-04 | 2012-03-06 |  |  |  |  | 61102 | 13 | 3 | ENP | 3 |
| A1600 |  | MRP for 8" pipeline | level of effort | 5d | 2012-02-21 A | 2012-02-26 A | 4229EPL110 SS, 4229EPL110 FF | 100% |  | 2012-03-04 | 2012-03-08 |  |  |  |  |  |  | 4 | ENP | 3 |
| 4229PPL90 |  | P.O for 8" pipeline |  | 5d | 2012-02-27 A | 2012-02-29 A | 4229EPL110 | 100% |  | 2012-03-04 | 2012-03-08 |  |  |  |  | 61102 | 15 | 4 | ENP | 3 |
| 4229PPL110 |  | Fabrication upto R.F.S |  | 126d | 2012-02-29 A | 2012-07-07 | 4229PPL100, 4229PPL90 | 76% | 30d | 2012-03-09 | 2012-07-12 | 404d | 0d | 2012-07-07 | SUPPLIER | 61102 | 16 | 3 | ENP | 3 |
| 4229PPL100 |  | L.C issued by Gupco |  | 5d | 2012-06-03 | 2012-06-07 | 4229PPL90 |  |  |  |  | 286d | 0d |  |  | 61102 |  | 3 | GUP | 3 |
| 4229PPL120 |  | Delivery upto site |  | 30d | 2012-07-08 | 2012-08-06 | 4229PPL110 |  |  |  |  | 418d | 219d |  | calendar | 61102 | 21 | 3 | ENP | 3 |

| ID | WBS | Activity | Type | Duration | Start | Finish | Predecessors | Complete | Remaining | Planned start | Planned finish | Total float | Free float | Constraint | Expected finish | Calendar | Global Commodity Code | Global Activity Code | Work Package | Resp. | Phase-1 |
| --- | --- | --- | --- | --- | --- | --- | --- | --- | --- | --- | --- | --- | --- | --- | --- | --- | --- | --- | --- | --- | --- |
|  | 30 | **Hot bends** |  |  | 2011-10-09 | 2012-10-05 |  |  |  |  |  |  |  |  |  |  |  |  |  |  |  |
| 4229PHB10 |  | Issue RFQ for hot bends |  | 2d | 2011-10-09 A | 2011-10-09 A | 4229EPL20 | 100% |  | 2011-08-15 | 2011-08-16 |  |  |  |  |  | 61202 | 03 | 3 | ENP | 3 |
| 4229PHB20 |  | Bidding for hot bends |  | 25d | 2011-10-10 A | 2011-10-30 A | 4229PHB10 | 100% |  | 2011-10-10 | 2011-11-03 |  |  | start on or after 2011-10-10 |  | SUPPLIER | 61202 | 04 | 3 | ENP | 3 |
| A1200 |  | T.E.R for hot bends | level of effort | 25.88d | 2011-10-30 A | 2011-12-08 A | 4229EPL90 SS, 4229EPL90 FF | 100% |  | 2011-12-04 | 2012-01-08 |  |  |  |  |  |  |  | 3 | ENP | 3 |
| 4229PHB30 |  | Receive revised commercial offers for hot bends |  | 5d | 2011-12-09 A | 2011-12-28 A | 4229EPL90 | 100% |  | 2011-12-28 | 2012-01-03 |  |  |  |  |  | 61202 | 10 | 4 | ENP | 3 |
| 4229PHB50 |  | commercial evaluation & bid committee for hot bends |  | 10d | 2011-12-29 A | 2012-01-24 A | 4229PHB30 | 100% |  | 2012-01-01 | 2012-01-12 |  |  |  |  |  | 61202 | 11 | 3 | ENP | 3 |
| 4229PHB60 |  | Client approval on bid committee reccomendation |  | 2d | 2012-01-26 A | 2012-01-31 A | 4229PHB50 | 100% |  | 2012-01-26 | 2012-01-29 |  |  |  |  |  | 61202 | 12 | 3 | GUP | 3 |
| A1560 |  | MRP for hot bends | level of effort | 6d | 2012-02-09 A | 2012-02-19 A | 4229EPL190 SS, 4229EPL190 FF | 100% |  | 2012-02-09 | 2012-02-16 |  |  |  |  |  |  |  | 4 | ENP | 3 |
| 4229PHB70 |  | F.O.C for hot bends |  | 3d | 2012-04-01 A | 2012-04-05 A | 4229PHB60, 4229PHB50 | 100% |  | 2012-02-01 | 2012-02-05 |  |  | start on or after 2012-02-01 |  |  | 61202 | 13 | 3 | ENP | 3 |
| 4229PHB100 |  | Fabrication upto R.F.S |  | 112d | 2012-04-06 A | 2012-09-05 | 4229PHB70, 4229PHB90 | 30% | 78d | 2012-02-09 | 2012-05-30 | 356d | 0d | start on or after 2012-02-09 | 2012-09-05 | SUPPLIER | 61202 | 16 | 3 | ENP | 3 |
| 4229PHB80 |  | P.O for hot bends |  | 5d | 2012-04-10 A | 2012-04-18 A | 4229EPL190 | 100% |  | 2012-03-04 | 2012-03-08 |  |  |  |  |  | 61202 | 15 | 4 | ENP | 3 |
| 4229PHB90 |  | L.C issued by Gupco |  | 5d | 2012-06-03 | 2012-06-07 | 4229PHB80 |  |  |  |  | 252d | 0d |  |  |  | 61202 |  | 3 | GUP | 3 |
| 4229PHB110 |  | Delivery upto site |  | 30d | 2012-09-06 | 2012-10-05 | 4229PHB100 |  |  |  |  | 358d | 159d |  |  | calendar | 61202 | 21 | 3 | ENP | 3 |
|  | 29 | **Flanges** |  |  | 2011-10-31 | 2012-07-03 |  |  |  |  |  |  |  |  |  |  |  |  |  |  |  |
| 4229PFL10 |  | Issue RFQ for Flanges |  | 2d | 2011-10-31 A | 2011-11-02 A | 4229EPL30 | 100% |  | 2011-12-04 | 2011-12-05 |  |  |  |  |  | 61205 | 03 | 3 | ENP | 3 |
| 4229P4220 |  | Bidding for Flanges |  | 2d | 2011-11-03 A | 2011-11-28 A | 4229PFL10 | 100% |  | 2011-12-03 | 2011-12-04 |  |  |  |  | SUPPLIER | 61205 | 04 | 3 | ENP | 3 |
| A1190 |  | T.E.R for flanges | level of effort | 20d | 2011-12-01 A | 2012-01-18 A | 4229EPL100 SS, 4229EPL100 FF | 100% |  | 2011-12-05 | 2012-01-01 |  |  |  |  |  |  |  | 3 | ENP | 3 |
| 4229PFL30 |  | Receive revised commercial offers for Flanges |  | 5d | 2012-01-19 A | 2012-01-24 A | 4229EPL100 | 100% |  | 2012-01-29 | 2012-02-02 |  |  |  |  |  | 61205 | 10 | 4 | ENP | 3 |
| 4229PFL40 |  | commercial evaluation & bid committee for Flanges |  | 10d | 2012-01-25 A | 2012-02-20 A | 4229PFL30 | 100% |  | 2012-02-05 | 2012-02-16 |  |  |  |  |  | 61205 | 11 | 3 | ENP | 3 |
| 4229PFL50 |  | Client approval on bid committee reccomendation |  | 2d | 2012-02-20 A | 2012-02-21 A | 4229PFL40 | 100% |  |  |  |  |  |  |  |  | 61205 | 12 | 3 | GUP | 3 |
| 4229PFL60 |  | F.O.C for Flanges |  | 3d | 2012-02-22 A | 2012-02-26 A | 4229PFL50, 4229PFL40 | 100% |  | 2012-03-04 | 2012-03-06 |  |  |  |  |  | 61205 | 13 | 3 | ENP | 3 |
| A1580 |  | MRP for flanges | level of effort | 2d | 2012-02-26 A | 2012-02-27 A | 4229EPL220 FF, 4229EPL220 SS | 100% |  | 2012-03-07 | 2012-03-08 |  |  |  |  |  |  |  | 3 | ENP | 3 |
| 4229PFL70 |  | P.O for Flanges |  | 5d | 2012-02-28 A | 2012-02-28 A | 4229EPL220 | 100% |  | 2012-03-04 | 2012-03-08 |  |  |  |  |  | 61205 | 15 | 3 | ENP | 3 |
| 4229PFL90 |  | Fabrication upto R.F.S |  | 112d | 2012-02-28 A | 2012-06-19 | 4229PFL70 | 84% | 18d | 2012-03-03 | 2012-06-22 | 409d | 0d |  |  | SUPPLIER | 61205 | 16 | 3 | ENP | 3 |
| 4229PFL80 |  | L.C issued by Gupco |  | 5d | 2012-06-03 | 2012-06-07 | 4229PFL70 |  |  |  |  | 330d |  |  |  |  | 61205 |  | 3 | GUP | 3 |
| 4229PFL100 |  | Delivery upto site |  | 14d | 2012-06-20 | 2012-07-03 | 4229PFL90 |  |  |  |  | 452d | 253d |  |  | calendar | 61205 | 21 | 3 | ENP | 3 |

| ID | WBS | Activity | Type | Duration | Start | Finish | Predecessors | Complete | Remaining | Planned start | Planned finish | Total float | Free float | Constraint | Expected finish | Calendar | Global Commodity Code | Global Activity Code | Work Package | Resp. | Phase-1 |
| --- | --- | --- | --- | --- | --- | --- | --- | --- | --- | --- | --- | --- | --- | --- | --- | --- | --- | --- | --- | --- | --- |
|  | 26 | **Anchor flanges** |  |  | 2011-10-25 | 2012-07-07 |  |  |  |  |  |  |  |  |  |  |  |  |  |  |  |
| 4229PAF10 |  | Issue RFQ for Anchor Flanges |  | 2d | 2011-10-25 A | 2011-10-26 A | 4229EPL50 | 100% |  | 2011-10-30 | 2011-10-31 |  |  |  |  |  | 44906 | 03 | 3 | ENP | 3 |
| 4229PAF20 |  | Bidding for Anchor Flanges |  | 25d | 2011-10-27 A | 2011-12-01 A | 4229PAF10 | 100% |  | 2011-11-01 | 2011-11-25 |  |  |  |  | SUPPLIER | 44906 | 04 | 3 | ENP | 3 |
| A1160 |  | T.E.R for anchor flanges | level of effort | 15d | 2011-12-06 A | 2012-01-05 A | 4229EPL150 FF, 4229EPL150 SS | 100% |  | 2011-12-06 | 2011-12-26 |  |  |  |  |  |  |  | 4 | ENP | 3 |
| 4229PAF30 |  | Receive revised commercial offers for Anchor Flanges |  | 5d | 2012-01-08 A | 2012-01-12 A | 4229EPL150 | 100% |  |  |  |  |  | start on or after 2012-01-08 |  |  | 44906 | 10 | 4 | ENP | 3 |
| 4229PAF40 |  | commercial evaluation & bid committee for Anchor Flanges |  | 10d | 2012-01-15 A | 2012-02-06 A | 4229PAF30 | 100% |  | 2012-01-15 | 2012-01-29 |  |  |  |  |  | 44906 | 11 | 3 | ENP | 3 |
| 4229PAF50 |  | Client approval on bid committee reccomendation |  | 2d | 2012-02-07 A | 2012-02-09 A | 4229PAF40 | 100% |  | 2012-03-18 | 2012-03-19 |  |  |  |  |  | 44906 | 12 | 3 | GUP | 3 |
| 4229PAF60 |  | F.O.C for Anchor Flanges |  | 3d | 2012-02-12 A | 2012-02-13 A | 4229PAF50, 4229PAF40 | 100% |  | 2012-03-04 | 2012-03-06 |  |  |  |  |  | 44906 | 13 | 3 | ENP | 3 |
| A1590 |  | MRP for anchor flanges | level of effort | 5d | 2012-02-14 A | 2012-02-28 A | 4229EPL280 FF, 4229EPL280 SS | 100% |  | 2012-03-04 | 2012-03-08 |  |  |  |  |  |  |  | 4 | ENP | 3 |
| 4229PAF70 |  | P.O for Anchor Flanges |  | 5d | 2012-02-28 A | 2012-02-28 A | 4229EPL280 | 100% |  | 2012-03-04 | 2012-03-08 |  |  |  |  |  | 44906 | 15 | 4 | ENP | 3 |
| 4229PAF90 |  | Fabrication upto R.F.S |  | 56d | 2012-02-28 A | 2012-05-15 A | 4229PAF80, 4229PAF70 | 100% |  | 2012-03-09 | 2012-05-03 |  |  |  |  | SUPPLIER | 44906 | 16 | 3 | ENP | 3 |
| 4229PAF100 |  | Delivery upto site |  | 30d | 2012-05-18 A | 2012-07-07 | 4229PAF90 |  | 30d | 2012-06-08 | 2012-07-07 | 448d | 249d |  |  | calendar | 44906 | 21 | 3 | ENP | 3 |
| 4229PAF80 |  | L.C issued by Gupco |  | 5d | 2012-06-03 | 2012-06-07 | 4229PAF70 |  |  |  |  | 308d | 0d |  |  |  | 44906 |  | 3 | GUP | 3 |
|  | 27 | **Isolating joints** |  |  | 2011-10-19 | 2012-07-07 |  |  |  |  |  |  |  |  |  |  |  |  |  |  |  |
| 4229PIJ10 |  | Issue RFQ for Isolating joints |  | 2d | 2011-10-19 A | 2011-10-19 A | 4229EPL80 | 100% |  | 2011-10-30 | 2011-10-31 |  |  |  |  |  | 61203 | 03 | 3 | ENP | 3 |
| 4229PIJ20 |  | Bidding for Isolating joints |  | 25d | 2011-10-20 A | 2011-11-10 A | 4229PIJ10 | 100% |  | 2011-11-01 | 2011-11-25 |  |  |  |  | SUPPLIER | 61203 | 04 | 3 | ENP | 3 |
| A1170 |  | T.E.R for isolating joints | level of effort | 18.88d | 2011-11-13 A | 2011-12-08 A | 4229EPL210 SS, 4229EPL210 FF | 100% |  | 2011-12-04 | 2011-12-28 |  |  |  |  |  |  |  | 4 | ENP | 3 |
| 4229PIJ40 |  | commercial evaluation & bid committee for Isolating joints |  | 10d | 2011-12-13 A | 2011-12-21 A | 4229PIJ30 | 100% |  | 2011-12-22 | 2012-01-04 |  |  |  |  |  | 61203 | 11 | 3 | ENP | 3 |
| 4229PIJ30 |  | Receive revised commercial offers for Isolating joints |  | 5d | 2011-12-13 A | 2011-12-21 A | 4229EPL210 | 100% |  | 2011-12-13 | 2011-12-19 |  |  |  |  |  | 61203 | 10 | 4 | ENP | 3 |
| 4229PIJ50 |  | Client approval on bid committee reccomendation |  | 2d | 2011-12-22 A | 2012-01-03 A | 4229PIJ40 | 100% |  | 2012-01-03 | 2012-01-04 |  |  |  |  |  | 61203 | 12 | 3 | GUP | 3 |
| 4229PIJ60 |  | F.O.C for Isolating joints |  | 3d | 2012-01-04 A | 2012-01-23 A | 4229PIJ50, 4229PIJ40 | 100% |  | 2012-01-23 | 2012-01-26 |  |  |  |  |  | 61203 | 13 | 3 | ENP | 3 |
| A1570 |  | MRP for isolating joints | level of effort | 4d | 2012-01-24 A | 2012-01-31 A | 4229EPL300 FF, 4229EPL300 SS | 100% |  | 2012-01-29 | 2012-02-01 |  |  |  |  |  |  |  | 4 | ENP | 3 |
| 4229PIJ70 |  | P.O for Isolating joints |  | 5d | 2012-02-01 A | 2012-02-02 A | 4229EPL300 | 100% |  | 2012-02-01 | 2012-02-07 |  |  |  |  |  | 61203 | 15 | 4 | ENP | 3 |
| 4229PIJ90 |  | Fabrication upto R.F.S |  | 98d | 2012-02-03 A | 2012-06-08 | 4229PIJ80, 4229PIJ70 | 100% | 0d | 2012-03-09 | 2012-06-14 | 434d | 0d |  | 2012-05-12 | SUPPLIER | 61203 | 16 | 3 | ENP | 3 |
| 4229PIJ80 |  | L.C issued by Gupco |  | 5d | 2012-06-03 | 2012-06-07 | 4229PIJ70 |  |  |  |  | 308d | 0d |  |  |  | 61203 |  | 3 | GUP | 3 |
| 4229PIJ100 |  | Delivery upto site |  | 30d | 2012-06-08 | 2012-07-07 | 4229PIJ90 |  |  |  |  | 448d | 249d |  |  | calendar | 61203 | 21 | 3 | ENP | 3 |

| ID | WBS | Activity | Type | Duration | Start | Finish | Predecessors | Complete | Planned start | Planned finish | Calendar | Global Commodity Code | Global Activity Code | Work Package | Resp. | Phase-1 |
| --- | --- | --- | --- | --- | --- | --- | --- | --- | --- | --- | --- | --- | --- | --- | --- | --- |
|  | 28 | **Heat shrink sleeves** |  |  | 2011-10-12 | 2012-05-27 |  |  |  |  |  |  |  |  |  |  |
| 4229PHS10 |  | Issue RFQ for Heat shrink sleeves |  | 2d | 2011-10-12 A | 2011-10-12 A | 4229EPL40 | 100% | 2011-10-30 | 2011-10-31 |  | 46201 | 03 | 3 | ENP | 3 |
| 4229PHS20 |  | Bidding for Heat shrink sleeves |  | 25d | 2011-10-13 A | 2011-11-02 A | 4229PHS10 | 100% | 2011-11-01 | 2011-11-25 | SUPPLIER | 46201 | 04 | 3 | ENP | 3 |
| A1210 |  | T.E.R for heat shrink sleeves | level of effort | 18.88d | 2011-11-03 A | 2011-12-05 A | 4229EPL130 SS, 4229EPL130 FF | 100% | 2011-12-04 | 2011-12-28 |  |  |  | 4 | ENP | 3 |
| 4229PHS30 |  | Receive revised commercial offers for Heat shrink sleeves |  | 5d | 2011-12-06 A | 2011-12-08 A | 4229EPL130 | 100% | 2011-12-06 | 2011-12-12 |  | 46201 | 10 | 4 | ENP | 3 |
| 4229PHS40 |  | commercial evaluation & bid committee for Heat shrink sleeves |  | 10d | 2011-12-09 A | 2011-12-12 A | 4229PHS30 | 100% | 2011-12-14 | 2011-12-27 |  | 46201 | 11 | 3 | ENP | 3 |
| 4229PHS50 |  | Client approval on bid committee reccomendation |  | 2d | 2011-12-22 A | 2012-01-03 A | 4229PHS40 | 100% | 2012-01-01 | 2012-01-02 |  | 46201 | 12 | 3 | GUP | 3 |
| 4229PHS60 |  | F.O.C for Heat shrink sleeves |  | 3d | 2012-01-04 A | 2012-01-23 A | 4229PHS40, 4229PHS50 | 100% | 2012-01-03 | 2012-01-05 |  | 46201 | 13 | 3 | ENP | 3 |
| 4229PHS80 |  | L.C issued by Gupco (not Applicable) |  | 5d | 2012-01-23 A | 2012-01-23 A | 4229PHS70 | 100% | 2012-01-22 | 2012-01-29 |  | 46201 |  | 3 | GUP | 3 |
| 4229PHS90 |  | Fabrication upto R.F.S |  | 49d | 2012-01-24 A | 2012-03-22 A | 4229PHS80, 4229PHS70 | 100% | 2012-01-30 | 2012-03-18 | SUPPLIER | 46201 | 16 | 3 | ENP | 3 |
| A1550 |  | MRP for heat shrink sleeves | level of effort | 5d | 2012-01-24 A | 2012-01-30 A | 4229EPL260 SS, 4229EPL260 FF | 100% | 2012-01-29 | 2012-02-02 |  |  |  | 4 | ENP | 3 |
| 4229PHS70 |  | P.O for Heat shrink sleeves |  | 5d | 2012-01-30 A | 2012-02-05 A | 4229EPL260 | 100% |  |  |  | 46201 | 15 | 3 | ENP | 3 |
| 4229PHS100 |  | Delivery upto site |  | 15d | 2012-03-23 A | 2012-05-27 A | 4229PHS90 | 100% | 2012-03-31 | 2012-04-14 | calendar | 46201 | 21 | 3 | ENP | 3 |
|  | 25 | **Kamos ring** |  |  | 2011-10-05 | 2012-03-24 |  |  |  |  |  |  |  |  |  |  |
| 4229PKR10 |  | Issue RFQ for Kamos ring |  | 2d | 2011-10-05 A | 2011-10-05 A | 4229EPL60 | 100% | 2011-10-30 | 2011-10-31 |  | 41901 | 03 | 3 | ENP | 3 |
| 4229PKR20 |  | Bidding for Kamos ring |  | 25d | 2011-10-06 A | 2011-11-12 A | 4229PKR10 | 100% | 2011-11-01 | 2011-11-25 | SUPPLIER | 41901 | 04 | 3 | ENP | 3 |
| A1220 |  | T.E.R for kamos ring | level of effort | 18.88d | 2011-11-13 A | 2011-11-20 A | 4229EPL140 SS, 4229EPL140 FF | 100% | 2011-12-04 | 2011-12-28 |  |  |  | 3 | ENP | 3 |
| 4229PKR30 |  | Receive revised commercial offers for Kamos ring |  | 5d | 2011-11-21 A | 2011-11-27 A | 4229EPL140 | 100% | 2011-12-04 | 2011-12-08 |  | 41901 | 10 | 3 | ENP | 3 |
| 4229PKR40 |  | commercial evaluation & bid committee for Kamos ring |  | 10d | 2011-11-27 A | 2011-12-07 A | 4229PKR30 | 100% | 2011-12-11 | 2011-12-22 |  | 41901 | 11 | 3 | ENP | 3 |
| 4229PKR50 |  | Client approval on bid committee reccomendation |  | 2d | 2011-12-07 A | 2011-12-11 A | 4229PKR40 | 100% | 2012-01-01 | 2012-01-02 |  | 41901 | 12 | 3 | GUP | 3 |
| 4229PKR60 |  | F.O.C for Kamos ring |  | 3d | 2011-12-12 A | 2011-12-20 A | 4229PKR40, 4229PKR50 | 100% | 2012-01-03 | 2012-01-05 |  | 41901 | 13 | 3 | ENP | 3 |
| A1540 |  | MRP for kamos ring | level of effort | 5d | 2011-12-21 A | 2011-12-26 A | 4229EPL270 FF, 4229EPL270 SS | 100% | 2012-01-08 | 2012-01-12 |  |  |  | 3 | ENP | 3 |
| 4229PKR70 |  | P.O for Kamos ring |  | 4d | 2011-12-27 A | 2012-01-01 A | 4229EPL270 | 100% |  |  |  | 41901 | 15 | 3 | ENP | 3 |
| 4229PKR80 |  | L.C issued by Gupco |  | 1d | 2012-01-02 A | 2012-01-02 A | 4229PKR70 | 100% | 2012-01-01 | 2012-01-01 |  | 41901 |  | 3 | GUP | 3 |
| 4229PKR90 |  | Fabrication upto R.F.S |  | 91d | 2012-01-02 A | 2012-03-04 A | 4229PKR80, 4229PKR70 | 100% | 2012-01-28 | 2012-04-27 | SUPPLIER | 41901 | 16 | 3 | ENP | 3 |
| 4229PKR100 |  | Delivery upto site |  | 30d | 2012-03-05 A | 2012-03-24 A | 4229PKR90 | 100% | 2012-04-02 | 2012-05-01 | calendar | 41901 | 21 | 3 | ENP | 3 |

| WBS | Activity |
| --- | --- |
| 4 | **Construction supervision** |
| 5 | **Pre-commissioning & Commissioning** |
| 6 | **(New WBS)** |

## Activity codes

| Code | Value | Meaning |
| --- | --- | --- |
| Global Activity Code | 01 | MRQ |
| Global Activity Code | 03 | RFQ |
| Global Activity Code | 04 | Bid Due Date |
| Global Activity Code | 09 | TER |
| Global Activity Code | 10 | Receive Revised Comm. Evaluation |
| Global Activity Code | 11 | Comm. Evaluation |
| Global Activity Code | 12 | No Objection Letter |
| Global Activity Code | 13 | F.O.C |
| Global Activity Code | 14 | MRP |
| Global Activity Code | 15 | P.O |
| Global Activity Code | 16 | Fabrication upto RFS |
| Global Activity Code | 21 | Delivery at Site |
| Global Commodity Code | 11301 | VERTICAL VESSELS |
| Global Commodity Code | 11303 | PRESSURE VESSELS ( LOCAL A7 ) |
| Global Commodity Code | 13103 | RECIPROCATING PUMP |
| Global Commodity Code | 16506 | CORROSION INHIBTOR INJECTION PACKAGES |
| Global Commodity Code | 18502 | SACRIFICIAL ANODES SYSTEM (SUPPLIERS) |
| Global Commodity Code | 19003 | LIFE SAVING EQUIPMENT |
| Global Commodity Code | 19004 | FIRE FIGHTING EQUIPMENT (LOCAL A7 ) |
| Global Commodity Code | 21001 | FIELD INSTRUMENT |
| Global Commodity Code | 21204 | PRESSURE CONTROLLERS |
| Global Commodity Code | 22106 | MULTIPHASE FLOW METERS |
| Global Commodity Code | 23402 | REGULATORS (PRESSURE , TEMPRATURE , FLOW , LEVEL , PURGE) |
| Global Commodity Code | 23406 | CHOKES AND VARIABLE RESTRICTORS |
| Global Commodity Code | 23409 | SPECIAL PURPOSE CONTROL VALVES |
| Global Commodity Code | 24701 | SAFETY AND RELIEF VALVES |
| Global Commodity Code | 25205 | FIRE DETECTION & ALARM SYSTEM |
| Global Commodity Code | 25211 | HYDRAULIC SYSTEM |
| Global Commodity Code | 28601 | TELECOMUNICATION SYSTEMS ROOM EQUIPMENT |
| Global Commodity Code | 29101 | INSTRUMENT MECHANICAL HOOK UP MATERIAL |
| Global Commodity Code | 29201 | INSTRUMENT ELECTRICAL HOOK UP MATERIAL |
| Global Commodity Code | 40001 | PIPING BULK MATERIALS (STOCKHOLDER) |
| Global Commodity Code | 40002 | PIPING BULK MATERIALS ( LOCAL A7 ) |
| Global Commodity Code | 40003 | SPECIAL ITEMS |
| Global Commodity Code | 41901 | GASKETS |
| Global Commodity Code | 42206 | C.S. BALL VALVES |
| Global Commodity Code | 44906 | ANCHOR FLANGES |
| Global Commodity Code | 46201 | SHRINKAGE SLEEVES |
| Global Commodity Code | 47101 | LAUNCHERS & RECEIVERS |
| Global Commodity Code | 50002 | ELECTRICAL BULK MATERIAL |
| Global Commodity Code | 51010 | NAVIGATIONAL AIDS |
| Global Commodity Code | 51018 | SOLAR SYSTEM POWER SUPPLY |
| Global Commodity Code | 61102 | CARBON STEEL LINE PIPES (SEAMLESS) |
| Global Commodity Code | 61202 | HOT BENDS |
| Global Commodity Code | 61203 | INSULATING JOINTS |
| Global Commodity Code | 61205 | FLANGES |
| Phase-1 | 1 | Engineering |
| Phase-1 | 3 | Procurement |
| Phase-2 | 4 | Fabrication |
| Resp | PTJ | Petrojet |
| Resp. | ENP | Enppi |
| Resp. | GUP | Gupco |
| Work Package | 0 | General and Overall |
| Work Package | 1 | Jacket and Piles |
| Work Package | 2 | Decks |
| Work Package | 3 | Topsides |
| Work Package | 4 | Sealines |

# Hillal-B PLATFORM DEVELOPMENT-Normal

Schedule from Primavera P6, 2013-01-23 to 2013-01-23, data date 2011-11-30.

## Calendars

- 6 DAY WORK PER WEEK: Mon-Thu 08:00-16:00; Fri off; Sat-Sun 08:00-16:00.

## Schedule

| ID | WBS | Activity | Type | Duration | Start | Finish | Total float |
| --- | --- | --- | --- | --- | --- | --- | --- |
|  | 1 | **General Milestone** |  |  | 2013-01-23 | 2013-01-23 |  |
| GM04 |  | Ready for Load out ( 02nd Shipment/ Jacket & Piles ) | milestone | 0d | 2013-01-23 | 2013-01-23 | 26d |
|  | 2 | **Engineering** |  |  |  |  |  |
|  | 1 | **Structure** |  |  |  |  |  |
|  | 2 | **TSF, E&I** |  |  |  |  |  |
|  | 3 | **Electrical & Instrumentation (E&I)** |  |  |  |  |  |
|  | 3 | **Procurment** |  |  |  |  |  |
|  | 1 | **Structure Material** |  |  |  |  |  |
|  | 2 | **P/L Spools Material** |  |  |  |  |  |
|  | 3 | **Piping Material** |  |  |  |  |  |
|  | 4 | **Equipment** |  |  |  |  |  |
|  | 5 | **E&I Material** |  |  |  |  |  |
|  | 1 | **Electrical Material** |  |  |  |  |  |
|  | 2 | **F&G Material** |  |  |  |  |  |
|  | 3 | **Telecom Material** |  |  |  |  |  |
|  | 4 | **Instrument Material** |  |  |  |  |  |
|  | 6 | **Pre-Fabrication** |  |  |  |  |  |
|  | 4 | **Fabrication** |  |  |  |  |  |
|  | 1 | **Jacket and Piles Fabrication** |  |  |  |  |  |
|  | 3 | **P/L Spools Fabrication** |  |  |  |  |  |
|  | 2 | **Deck Fabrication** |  |  |  |  |  |
|  | 1 | **Deck Structure Fabrication** |  |  |  |  |  |
|  | 2 | **TSF Fabrication and Erection** |  |  |  |  |  |
|  | 1 | **Piping fabrication & erection** |  |  |  |  |  |
|  | 2 | **Equipment erection** |  |  |  |  |  |
|  | 3 | **E&I Activies** |  |  |  |  |  |
|  | 4 | **Pre-commissioning** |  |  |  |  |  |
|  | 5 | **L/O & Sea Fastening** |  |  |  |  |  |
|  | 3 | **01st Trip (P/L Spools 18" & 8")** |  |  |  |  |  |
|  | 1 | **02nd Trip (Jacket & Piles)** |  |  |  |  |  |
|  | 2 | **03rd Trip ( Deck)** |  |  |  |  |  |
|  | Master Rev.F-N-4 | **Hillal-B PLATFORM DEVELOPMENT-Normal** |  |  |  |  |  |
|  | 1 | **General Milestone** |  |  |  |  |  |
|  | 2 | **Engineering** |  |  |  |  |  |
|  | 1 | **Structure** |  |  |  |  |  |
|  | 2 | **TSF, E&I** |  |  |  |  |  |
|  | 3 | **Electrical & Instrumentation (E&I)** |  |  |  |  |  |
|  | 3 | **Procurment** |  |  |  |  |  |
|  | 1 | **Structure Material** |  |  |  |  |  |
|  | 2 | **P/L Spools Material** |  |  |  |  |  |
|  | 3 | **Piping Material** |  |  |  |  |  |
|  | 4 | **Equipment** |  |  |  |  |  |
|  | 5 | **E&I Material** |  |  |  |  |  |
|  | 1 | **Electrical Material** |  |  |  |  |  |
|  | 2 | **F&G Material** |  |  |  |  |  |
|  | 3 | **Telecom Material** |  |  |  |  |  |
|  | 4 | **Instrument Material** |  |  |  |  |  |
|  | 6 | **Pre-Fabrication** |  |  |  |  |  |
|  | 4 | **Fabrication** |  |  |  |  |  |
|  | 1 | **Jacket and Piles Fabrication** |  |  |  |  |  |
|  | 3 | **P/L Spools Fabrication** |  |  |  |  |  |
|  | 2 | **Deck Fabrication** |  |  |  |  |  |
|  | 1 | **Deck Structure Fabrication** |  |  |  |  |  |
|  | 2 | **TSF Fabrication and Erection** |  |  |  |  |  |
|  | 1 | **Piping fabrication & erection** |  |  |  |  |  |
|  | 2 | **Equipment erection** |  |  |  |  |  |
|  | 3 | **E&I Activies** |  |  |  |  |  |
|  | 4 | **Pre-commissioning** |  |  |  |  |  |
|  | 5 | **L/O & Sea Fastening** |  |  |  |  |  |
|  | 3 | **01st Trip (P/L Spools 18" & 8")** |  |  |  |  |  |
|  | 1 | **02nd Trip (Jacket & Piles)** |  |  |  |  |  |
|  | 2 | **03rd Trip ( Deck)** |  |  |  |  |  |
