# Polaris DC-1 (Aviapolis Data Campus Phase 1, Vantaa)

Schedule from Primavera P6, 2026-03-02 to 2027-10-25, data date 2026-03-02, costs in EUR.
Must finish by 2027-10-25

## Calendars

- Project standard calendar (Finnish holidays): Mon-Fri 08:00-12:00, 13:00-17:00; Sat-Sun off. Exceptions (off unless hours are given): 2026-04-03, 2026-04-06, 2026-05-01, 2026-05-14, 2026-06-19 to 2026-06-20, 2026-10-31, 2026-12-06, 2026-12-24 to 2026-12-26, 2027-01-01, 2027-01-06, 2027-03-26, 2027-03-29, 2027-05-01, 2027-05-06, 2027-06-25 to 2027-06-26.
- Heating season (Oct-Apr) for waste-heat test: Mon-Fri 08:00-12:00, 13:00-17:00; Sat-Sun off. Exceptions (off unless hours are given): 2027-05-01 to 2027-09-30.

## Resources

| Resource | Group |
| --- | --- |
| Site Management | labor |
| Procurement | labor |
| Design Management | labor |
| Site Establishment Crew | labor |
| Structural Design | labor |
| Earthworks Crew | labor |
| Concrete Crew | labor |
| Piling Crew | labor |
| Steel & Precast Crew | labor |
| Structural Steel Crew | labor |
| Facade Crew | labor |
| Waterproofing Crew | labor |
| Mechanical Crew | labor |
| Electrical Crew | labor |
| Fit-Out Crew | labor |
| Civil Crew | labor |
| Commissioning Team | labor |
| Landscaping Crew | labor |
| QA/QC Inspector | labor |

## Schedule

| ID | WBS | Activity | Type | Duration | Start | Finish | Predecessors | Total float | Free float | Resources | Cost |
| --- | --- | --- | --- | --- | --- | --- | --- | --- | --- | --- | --- |
|  | 1 | **1** |  |  | 2026-03-02 | 2026-06-08 |  |  |  |  |  |
|  | 1 | **Contract milestones** |  |  | 2026-03-02 | 2026-03-02 |  |  |  |  |  |
| 10 |  | Commencement Date (MS-01) | milestone | 0d | 2026-03-02 | 2026-03-02 |  | 0d |  |  |  |
|  | 2 | **Mobilisation** |  |  | 2026-03-02 | 2026-03-11 |  |  |  |  |  |
| 20 |  | Site handover & boundary survey |  | 3d | 2026-03-02 | 2026-03-04 | 10 | 139d | 0d | Site Management [60 h] | 5,558 |
| 30 |  | Temporary site facilities setup |  | 5d | 2026-03-05 | 2026-03-11 | 20 | 139d | 17d | Site Establishment Crew [250 h] | 9,264 |
|  | 3 | **Permits & statutory** |  |  | 2026-03-02 | 2026-04-07 |  |  |  |  |  |
| 40 |  | Statutory supervisors appointed & approved (PP-001 Cond. 1-3) |  | 25d | 2026-03-02 | 2026-04-07 | 10 | 122d | 0d | Site Management [500 h] | 46,320 |
| 70 |  | Pre-condition survey & blasting permit (PP-001 Cond. 9-10) |  | 15d | 2026-03-02 | 2026-03-20 | 10 | 134d | 10d | Site Management [300 h] | 27,792 |
|  | 4 | **Plant & cranage** |  |  | 2026-03-02 | 2026-06-08 |  |  |  |  |  |
| 50 |  | Procure tower cranes (2 units) & VR approval |  | 60d | 2026-03-02 | 2026-05-28 | 10 | 137d | 0d | Procurement [600 h] | 111,167 |
| 60 |  | Tower crane erection |  | 7d | 2026-05-29 | 2026-06-08 | 50 | 137d | 68d | Piling Crew [280 h] | 12,970 |
|  | 5 | **Design** |  |  | 2026-03-02 | 2026-05-06 |  |  |  |  |  |
| 80 |  | Concept design (S1 concept submission MS-02) |  | 15d | 2026-03-02 | 2026-03-20 | 10 | 9d | 0d | Design Management [600 h] | 27,792 |
| 90 |  | Detailed design (S2 detailed submission MS-03) |  | 30d | 2026-03-23 | 2026-05-06 | 80 | 9d | 0d | Structural Design [1200 h] | 55,584 |
|  | 2 | **2** |  |  | 2026-03-02 | 2027-03-11 |  |  |  |  |  |
|  | 1 | **Long-lead procurement** |  |  | 2026-03-02 | 2027-03-11 |  |  |  |  |  |
| 100 |  | Transformers 2x16 MVA - manufacture & delivery (LT-01) |  | 260d | 2026-03-02 | 2027-03-11 | 10 | 0d |  | Procurement [2600 h] | 585,931 |
| 110 |  | 20 kV switchgear & protection (LT-02, 38 wk) |  | 190d | 2026-05-07 | 2027-02-04 | 90 | 30d |  | Procurement [1900 h] | 456,235 |
| 120 |  | Standby generators 8x2.5 MVA (LT-03, 40 wk) |  | 200d | 2026-05-07 | 2027-02-18 | 90 | 9d | 0d | Procurement [2000 h] | 474,763 |
| 130 |  | UPS modules 16x1000 kVA (LT-04, 30 wk) |  | 150d | 2026-05-07 | 2026-12-04 | 90 | 64d | 0d | Procurement [1500 h] | 277,918 |
| 140 |  | Battery systems (LT-05, 24 wk) |  | 120d | 2026-05-07 | 2026-10-23 | 90 | 100d | 36d | Procurement [1200 h] | 222,335 |
| 210 |  | Busway (LT-06, 20 wk) |  | 100d | 2026-05-07 | 2026-09-25 | 90 | 111d | 39d | Procurement [1000 h] | 185,279 |
|  | 2 | **Long-lead procurement** |  |  | 2026-05-07 | 2026-12-04 |  |  |  |  |  |
| 150 |  | Chillers 4 nr (LT-07, 26 wk) |  | 130d | 2026-05-07 | 2026-11-06 | 90 | 85d | 9d | Procurement [1300 h] | 240,863 |
| 160 |  | Dry coolers 10 nr (LT-08, 22 wk) |  | 110d | 2026-05-07 | 2026-10-09 | 90 | 105d | 29d | Procurement [1100 h] | 203,807 |
| 170 |  | CRAH units 28 nr (LT-09, 22 wk) |  | 110d | 2026-05-07 | 2026-10-09 | 90 | 103d | 34d | Procurement [1100 h] | 203,807 |
| 180 |  | Waste-heat recovery plant 4 MW (LT-10, 30 wk) |  | 150d | 2026-05-07 | 2026-12-04 | 90 | 179d | 0d | Procurement [1500 h] | 277,918 |

Notes:
- 20: Duration Basis: hist-prj-001-act-125 / Expenses: Site handover & boundary survey — Materials/Plant/Sublet 5558
- 30: Duration Basis: hist-prj-001-act-126 / Expenses: Temporary site facilities setup — Materials/Plant/Sublet 9264
- 40: Duration Basis: hist-prj-004-act-9 / Notes: Works cannot start until approved (Cond. 1-3, MS-04). / Expenses: Statutory supervisors appointed & approved (PP-001 Cond. 1-3) — Materials/Plant/Sublet 46320
- 70: Duration Basis: hist-prj-001-act-7 / Notes: Blasting permit from Vantaa rescue authority; neighbour survey before blasting. / Expenses: Pre-condition survey & blasting permit (PP-001 Cond. 9-10) — Materials/Plant/Sublet 27792
- 50: Duration Basis: hist-aurora-tower-act-56 / Expenses: Procure tower cranes (2 units) & VR approval — Materials/Plant/Sublet 111167
- 60: Duration Basis: hist-aurora-tower-act-71 / Expenses: Tower crane erection — Materials/Plant/Sublet 12970
- 80: Duration Basis: hist-prj-001-act-12 / Expenses: Concept design (S1 concept submission MS-02) — Materials/Plant/Sublet 27792
- 90: Duration Basis: hist-prj-001-act-15 / Expenses: Detailed design (S2 detailed submission MS-03) — Materials/Plant/Sublet 55584
- 100: Duration Basis: hist-prj-001-act-109 / Notes: Duration set by PDC-LT-001 LT-01 (52 weeks = 260 wd), NOT by the 35-day analog. Order-by 2026-01-16 precedes Commencement: ordered at Commencement here. / Expenses: Transformers 2x16 MVA - manufacture & delivery (LT-01) — Materials/Plant/Sublet 585931
- 110: Duration Basis: hist-prj-001-act-107 / Notes: PDC-LT-001 LT-02 38 weeks governs over 40-day analog. / Expenses: 20 kV switchgear & protection (LT-02, 38 wk) — Materials/Plant/Sublet 456235
- 120: Duration Basis: hist-prj-001-act-110 / Notes: PDC-LT-001 LT-03 governs. / Expenses: Standby generators 8x2.5 MVA (LT-03, 40 wk) — Materials/Plant/Sublet 474763
- 130: Duration Basis: hist-prj-001-act-110 / Notes: PDC-LT-001 LT-04 governs. / Expenses: UPS modules 16x1000 kVA (LT-04, 30 wk) — Materials/Plant/Sublet 277918
- 140: Duration Basis: hist-prj-001-act-110 / Notes: PDC-LT-001 LT-05 governs. / Expenses: Battery systems (LT-05, 24 wk) — Materials/Plant/Sublet 222335
- 210: Duration Basis: hist-prj-001-act-110 / Notes: PDC-LT-001 LT-06 governs. / Expenses: Busway (LT-06, 20 wk) — Materials/Plant/Sublet 185279
- 150: Duration Basis: hist-prj-001-act-103 / Notes: PDC-LT-001 LT-07 governs. / Expenses: Chillers 4 nr (LT-07, 26 wk) — Materials/Plant/Sublet 240863
- 160: Duration Basis: hist-prj-001-act-101 / Notes: PDC-LT-001 LT-08 governs. / Expenses: Dry coolers 10 nr (LT-08, 22 wk) — Materials/Plant/Sublet 203807
- 170: Duration Basis: hist-prj-001-act-101 / Notes: PDC-LT-001 LT-09 governs. / Expenses: CRAH units 28 nr (LT-09, 22 wk) — Materials/Plant/Sublet 203807
- 180: Duration Basis: hist-prj-001-act-99 / Notes: PDC-LT-001 LT-10 governs; needed on site 2027-04-30. / Expenses: Waste-heat recovery plant 4 MW (LT-10, 30 wk) — Materials/Plant/Sublet 277918

| ID | WBS | Activity | Type | Duration | Start | Finish | Predecessors | Total float | Free float | Constraint | Calendar | Resources | Cost |
| --- | --- | --- | --- | --- | --- | --- | --- | --- | --- | --- | --- | --- | --- |
|  | 3 | **Long-lead procurement** |  |  | 2026-05-07 | 2026-09-11 |  |  |  |  |  |  |  |
| 190 |  | Structural steel fabrication (LT-11, 18 wk) |  | 90d | 2026-05-07 | 2026-09-11 | 90 | 69d | 0d |  |  | Procurement [900 h] | 166,751 |
| 200 |  | Precast concrete wall panels (LT-12, 16 wk) |  | 80d | 2026-05-07 | 2026-08-28 | 90 | 83d | 0d |  |  | Procurement [800 h] | 148,223 |
|  | 4 | **Long-lead procurement** |  |  | 2026-05-07 | 2026-09-25 |  |  |  |  |  |  |  |
| 220 |  | Fire suppression equipment (LT-15, 20 wk) |  | 100d | 2026-05-07 | 2026-09-25 | 90 | 123d |  |  |  | Procurement [1000 h] | 1,465,343 |
| 230 |  | BMS/DCIM hardware (LT-14, 16 wk) |  | 80d | 2026-05-07 | 2026-08-28 | 90 | 143d |  |  |  | Procurement [800 h] | 1,809,045 |
|  | 3 | **3** |  |  | 2026-04-08 | 2027-10-05 |  |  |  |  |  |  |  |
|  | 1 | **Section 1 - groundworks** |  |  | 2026-04-08 | 2026-06-30 |  |  |  |  |  |  |  |
| 240 |  | Rock excavation by blasting, S1 zone (3,213.6 m3) |  | 29.6d | 2026-04-08 | 2026-05-21 | 40, 70 | 124d | 2d |  |  | Earthworks Crew [4736 h] | 562,952 |
| 250 |  | Bulk excavation till - S1 (Hall 1 + shared infrastructure, 7,020 m3) |  | 32.3d | 2026-04-08 | 2026-05-25 | 40, 30 | 122d | 0d |  |  | Earthworks Crew [5168 h] | 682,339 |
| 260 |  | Foundations - pads, strips, ground beams S1 |  | 10d | 2026-05-26 | 2026-06-08 | 240, 250 | 122d | 0d |  |  | Concrete Crew [1600 h] | 872,328 |
| 270 |  | Ground-bearing slab 250 mm - S1 (B.08 share, 1.5 zone factor) |  | 14.9d | 2026-06-09 | 2026-06-30 | 260 | 122d | 43d |  |  | Concrete Crew [2384 h] | 1,833,582 |
|  | 2 | **Section 1 - HV substation** |  |  | 2027-03-12 | 2027-03-24 |  |  |  |  |  |  |  |
| 440 |  | Transformers install & pre-energisation test (S1 shared) |  | 5d | 2027-03-12 | 2027-03-18 | 100, 270 | 0d |  |  |  | Electrical Crew [300 h] | 5,168,691 |
| 450 |  | 20 kV switchgear install (S1) |  | 3d | 2027-03-19 | 2027-03-23 | 110, 440 | 0d |  |  |  | Electrical Crew [180 h] | 2,746,202 |
| 480 |  | Grid energisation (MS-09, earliest 2027-03-12) | milestone | 0d | 2027-03-24 | 2027-03-24 | 450 | 0d |  |  |  |  |  |
|  | 3 | **Section 1 - Generator compound** |  |  | 2027-02-19 | 2027-03-10 |  |  |  |  |  |  |  |
| 460 |  | Standby generators install (8 nr, 4 pairs) |  | 14d | 2027-02-19 | 2027-03-10 | 120, 260 | 9d |  |  |  | Electrical Crew [1680 h] | 11,890,220 |
|  | 4 | **Heat recovery** |  |  | 2026-12-07 | 2027-10-05 |  |  |  |  |  |  |  |
| 1100 |  | Waste-heat recovery plant install & commissioning (excl. witnessed 72 h test) |  | 40d | 2026-12-07 | 2027-02-04 | 180, 470 | 179d | 166d |  |  | Mechanical Crew [4800 h] | 4,149,618 |
| 1222 |  | District heating boundary works (PDC-DH-001; complete by 2027-08-31) |  | 40d | 2027-03-24 | 2027-05-21 | 480 | 71d |  | finish on or before 2027-08-31 |  | Mechanical Crew [2400 h] |  |
| 1201 |  | 72 h waste-heat recovery witnessed test (Section 4 gate; heating-season calendar) |  | 3d | 2027-10-01 | 2027-10-05 | 1222, 1100, 1040 | 13d |  | start on or after 2026-03-02 | Heating season (Oct-Apr) for waste-heat test | Commissioning Team [120 h] | 5,558 |
|  | 5 | **Section 1 - Commissioning** |  |  | 2026-12-11 | 2027-05-28 |  |  |  |  |  |  |  |
| 1120 |  | S1 HVAC commissioning |  | 10d | 2026-12-11 | 2026-12-28 | 400, 470 | 171d | 67d |  |  | Commissioning Team [400 h] | 189,046 |
| 1110 |  | S1 electrical systems testing (L3) |  | 8d | 2027-03-24 | 2027-04-06 | 480, 460, 430 | 104d | 0d |  |  | Commissioning Team [320 h] | 185,340 |
| 1130 |  | S1 pre-commissioning walkdowns |  | 5d | 2027-04-07 | 2027-04-13 | 1110, 1120 | 104d | 0d |  |  | QA/QC Inspector [100 h] | 208,202 |
| 1140 |  | S1 L4 integrated systems testing (IST) |  | 16d | 2027-04-14 | 2027-05-05 | 1130 | 104d | 0d |  |  | Commissioning Team [1280 h] | 182,879 |
| 1150 |  | S1 L5 24 h generator load-bank test (09-16 window exemption required) |  | 8d | 2027-05-07 | 2027-05-18 | 1140 | 104d | 0d |  |  | Commissioning Team [320 h] | 195,084 |
| 1160 |  | S1 authority occupancy inspection |  | 3d | 2027-05-19 | 2027-05-21 | 1150 | 104d | 0d |  |  | Site Management [60 h] | 36,414 |
| 1170 |  | S1 occupancy permit receipt |  | 5d | 2027-05-24 | 2027-05-28 | 1160 | 104d | 0d |  |  | Site Management [100 h] | 9,264 |

Notes:
- 190: Duration Basis: hist-prj-004-act-79 / Notes: PDC-LT-001 LT-11 governs. / Expenses: Structural steel fabrication (LT-11, 18 wk) — Materials/Plant/Sublet 166751
- 200: Duration Basis: hist-prj-001-act-80 / Notes: PDC-LT-001 LT-12 governs. / Expenses: Precast concrete wall panels (LT-12, 16 wk) — Materials/Plant/Sublet 148223
- 220: Duration Basis: hist-prj-001-act-115 / Notes: PDC-LT-001 LT-15 governs. / Expenses: Fire suppression equipment (LT-15, 20 wk) — Materials/Plant/Sublet 1465343
- 230: Duration Basis: hist-prj-001-act-105 / Notes: PDC-LT-001 LT-14 governs. / Expenses: BMS/DCIM hardware (LT-14, 16 wk) — Materials/Plant/Sublet 1809045
- 240: Duration Basis: hist-prj-001-act-137 / Notes: No rock analog in history: rate set at 50% of bulk earthworks (judgement). Blasting 08:00-18:00 Mon-Fri (PP-001 Cond. 13). / Expenses: Rock excavation by blasting, S1 zone (3,213.6 m3) — Materials/Plant/Sublet 562952
- 250: Duration Basis: hist-prj-001-act-132 / Expenses: Bulk excavation till - S1 (Hall 1 + shared infrastructure, 7,020 m3) — Materials/Plant/Sublet 682339
- 260: Duration Basis: hist-prj-001-act-141 / Notes: Pads/strips have no volume in BOQ; analog duration used. / Expenses: Foundations - pads, strips, ground beams S1 — Materials/Plant/Sublet 872328
- 270: Duration Basis: hist-prj-005-act-148 / Notes: Ground-bearing slab 250 mm, 432 m3 per hall x 1.5 S1 zone factor = 648 m3 (BOQ B.08 share). Rate: hist-prj-005-act-148 (3.125 m3/member-day, 2 crews x 8). Duration = 648/50 x 1.15 = 14.9. / Expenses: Ground-bearing slab 250 mm - S1 (B.08 share, 1.5 zone factor) — Materials/Plant/Sublet 1833582
- 440: Duration Basis: hist-prj-001-act-180 / Expenses: Transformers install & pre-energisation test (S1 shared) — Materials/Plant/Sublet 5168691
- 450: Duration Basis: hist-prj-001-act-181 / Expenses: 20 kV switchgear install (S1) — Materials/Plant/Sublet 2746202
- 480: Duration Basis: hist-prj-001-act-180 / Notes: Third-party DNO date (PDC-GC-001 / MS-09).
- 460: Duration Basis: hist-prj-001-act-182 / Expenses: Standby generators install (8 nr, 4 pairs) — Materials/Plant/Sublet 11890220
- 1100: Duration Basis: hist-prj-001-act-171 / Notes: Install analog 8 wd per AHU x5 set; 72 h test in heating season per PDC-DH-001; duration is judgement on analog. / Expenses: Waste-heat recovery plant install & commissioning (excl. witnessed 72 h test) — Materials/Plant/Sublet 4149618
- 1222: Duration Basis: hist-prj-001-act-171 / Notes: Third-party DH boundary date (PDC-DH-001). Duration 40 wd is judgement on analog (no boundary-works analog).
- 1201: Duration Basis: hist-prj-001-act-171 / Notes: Section 4 gate: 72 h witnessed waste-heat test after Hall 4 IST; heating-season calendar HS attached for export (PDC-DH-001 heating season Oct-Apr). Constraint removed; timing from logic. / Expenses: 72 h waste-heat recovery witnessed test (Section 4 gate; heating-season calendar) — Materials/Plant/Sublet 5558
- 1120: Duration Basis: hist-prj-001-act-215 / Expenses: S1 HVAC commissioning — Materials/Plant/Sublet 189046
- 1110: Duration Basis: hist-prj-001-act-217 / Expenses: S1 electrical systems testing (L3) — Materials/Plant/Sublet 185340
- 1130: Duration Basis: hist-prj-001-act-214 / Expenses: S1 pre-commissioning walkdowns — Materials/Plant/Sublet 208202
- 1140: Duration Basis: hist-aurora-tower-act-129 / Expenses: S1 L4 integrated systems testing (IST) — Materials/Plant/Sublet 182879
- 1150: Duration Basis: hist-prj-001-act-217 / Notes: Weak analog. PP-001 Cond. 15 limits generator testing to 09-16 weekdays; 24 h test needs written exemption. / Expenses: S1 L5 24 h generator load-bank test (09-16 window exemption required) — Materials/Plant/Sublet 195084
- 1160: Duration Basis: hist-prj-001-act-230 / Expenses: S1 authority occupancy inspection — Materials/Plant/Sublet 36414
- 1170: Duration Basis: hist-prj-001-act-231 / Expenses: S1 occupancy permit receipt — Materials/Plant/Sublet 9264

| ID | WBS | Activity | Type | Duration | Start | Finish | Predecessors | Total float | Free float | Resources | Cost |
| --- | --- | --- | --- | --- | --- | --- | --- | --- | --- | --- | --- |
|  | 6 | **Section 1 - Milestones** |  |  | 2027-05-31 | 2027-05-31 |  |  |  |  |  |
| 1180 |  | Section 1 Taking Over (MS-S1 2027-05-02) | milestone | 0d | 2027-05-31 | 2027-05-31 | 1170, 1190 | 104d |  |  |  |
|  | 4 | **4** |  |  | 2026-08-31 | 2027-04-16 |  |  |  |  |  |
|  | 1 | **Section 1 - Hall 1** |  |  | 2026-08-31 | 2026-11-10 |  |  |  |  |  |
| 300 |  | Hall 1 precast wall panels |  | 14.2d | 2026-08-31 | 2026-09-17 | 200, 270 | 83d | 0d | Steel & Precast Crew [1704 h] | 468,919 |
| 280 |  | Hall 1 structural steel erection |  | 11.5d | 2026-09-14 | 2026-09-29 | 270, 190, 60 | 69d | 0d | Structural Steel Crew [1380 h] | 944,266 |
| 310 |  | Hall 1 cladding |  | 23.7d | 2026-09-18 | 2026-10-21 | 300 | 83d | 0d | Facade Crew [3792 h] | 535,446 |
| 290 |  | Hall 1 metal deck |  | 8.8d | 2026-09-30 | 2026-10-12 | 280 | 69d | 0d | Structural Steel Crew [1056 h] | 247,574 |
| 320 |  | Hall 1 roof insulation |  | 8.3d | 2026-10-13 | 2026-10-22 | 290 | 69d | 0d | Waterproofing Crew [332 h] | 185,677 |
| 340 |  | Hall 1 acoustic louvres |  | 8.9d | 2026-10-22 | 2026-11-03 | 310 | 96d |  | Facade Crew [356 h] | 160,429 |
| 330 |  | Hall 1 roof membrane |  | 13.2d | 2026-10-23 | 2026-11-10 | 320 | 69d | 0d | Waterproofing Crew [528 h] | 368,876 |
|  | 2 | **Section 1 - MEP** |  |  | 2026-10-14 | 2026-12-17 |  |  |  |  |  |
| 350 |  | S1 chilled water pipework (712 m, cooling spine) |  | 27.3d | 2026-10-14 | 2026-11-19 | 290 SS+10d | 76d | 0d | Mechanical Crew [3276 h] | 2,342,506 |
| 360 |  | Hall 1 cable containment |  | 7.2d | 2026-11-11 | 2026-11-19 | 330 | 72d | 0d | Electrical Crew [576 h] | 1,213,754 |
| 410 |  | Hall 1 busway install |  | 5.8d | 2026-11-20 | 2026-11-27 | 360, 210 | 72d | 0d | Electrical Crew [464 h] | 446,074 |
| 470 |  | Chiller & dry cooler installation (S1 spine) |  | 8d | 2026-11-20 | 2026-12-01 | 150, 160, 350 | 76d | 3d | Mechanical Crew [960 h] | 7,863,845 |
| 1200 |  | Hall 1 cable/busway fit-out finishing |  | 5.8d | 2026-11-30 | 2026-12-07 | 410 | 72d |  | Electrical Crew [464 h] | 478,661 |
| 420 |  | Hall 1 UPS install (4 nr) |  | 6d | 2026-12-07 | 2026-12-14 | 130, 370 | 64d | 0d | Electrical Crew [240 h] | 788,190 |
| 430 |  | Hall 1 battery install (4 nr) |  | 3d | 2026-12-15 | 2026-12-17 | 140, 420 | 64d |  | Electrical Crew [120 h] | 281,294 |
|  | 3 | **Section 1 - Hall 1** |  |  | 2026-11-11 | 2026-12-10 |  |  |  |  |  |
| 370 |  | Hall 1 data hall screed |  | 12d | 2026-11-11 | 2026-11-26 | 330, 310 | 69d | 0d | Fit-Out Crew [480 h] | 179,758 |
| 380 |  | Hall 1 cold-aisle containment |  | 5.4d | 2026-11-27 | 2026-12-03 | 370 | 74d |  | Fit-Out Crew [864 h] | 262,848 |
| 390 |  | Hall 1 internal partitions |  | 8.2d | 2026-11-27 | 2026-12-08 | 370 | 71d |  | Fit-Out Crew [1640 h] | 255,783 |
| 400 |  | Hall 1 CRAH units install (7 nr) |  | 10d | 2026-11-27 | 2026-12-10 | 370, 170 | 69d | 0d | Mechanical Crew [600 h] | 578,927 |

Notes:
- 1180: Duration Basis: hist-aurora-tower-act-129
- 300: Duration Basis: hist-prj-001-act-146 / Notes: Proxy: wall area from perimeter; precast plank rate. / Expenses: Hall 1 precast wall panels — Materials/Plant/Sublet 468919
- 280: Duration Basis: hist-prj-004-act-149 / Notes: Steel erection: no usable measured-quantity rate (history steel row has no comparable unit). Duration = analog 40 wd full frame / 4 halls x 1.15 = 11.5 (analog duration basis, hist-prj-004-act-149). / Expenses: Hall 1 structural steel erection — Materials/Plant/Sublet 944266
- 310: Duration Basis: hist-prj-001-act-151 / Expenses: Hall 1 cladding — Materials/Plant/Sublet 535446
- 290: Duration Basis: hist-prj-004-act-151 / Expenses: Hall 1 metal deck — Materials/Plant/Sublet 247574
- 320: Duration Basis: hist-prj-001-act-154 / Expenses: Hall 1 roof insulation — Materials/Plant/Sublet 185677
- 340: Duration Basis: hist-prj-001-act-152 / Expenses: Hall 1 acoustic louvres — Materials/Plant/Sublet 160429
- 330: Duration Basis: hist-prj-001-act-153 / Expenses: Hall 1 roof membrane — Materials/Plant/Sublet 368876
- 350: Duration Basis: hist-prj-001-act-168 / Expenses: S1 chilled water pipework (712 m, cooling spine) — Materials/Plant/Sublet 2342506
- 360: Duration Basis: hist-prj-001-act-183 / Expenses: Hall 1 cable containment — Materials/Plant/Sublet 1213754
- 410: Duration Basis: hist-prj-001-act-183 / Notes: Analog share of cable containment, 1/4. / Expenses: Hall 1 busway install — Materials/Plant/Sublet 446074
- 470: Duration Basis: hist-prj-001-act-171 / Expenses: Chiller & dry cooler installation (S1 spine) — Materials/Plant/Sublet 7863845
- 1200: Duration Basis: hist-prj-001-act-183 / Expenses: Hall 1 cable/busway fit-out finishing — Materials/Plant/Sublet 478661
- 420: Duration Basis: hist-prj-001-act-182 / Expenses: Hall 1 UPS install (4 nr) — Materials/Plant/Sublet 788190
- 430: Duration Basis: hist-prj-001-act-182 / Expenses: Hall 1 battery install (4 nr) — Materials/Plant/Sublet 281294
- 370: Duration Basis: hist-prj-001-act-204 / Expenses: Hall 1 data hall screed — Materials/Plant/Sublet 179758
- 380: Duration Basis: hist-prj-001-act-208 / Notes: Proxy: suspended-ceiling rate; no containment analog. / Expenses: Hall 1 cold-aisle containment — Materials/Plant/Sublet 262848
- 390: Duration Basis: hist-prj-001-act-201 / Expenses: Hall 1 internal partitions — Materials/Plant/Sublet 255783
- 400: Duration Basis: hist-prj-001-act-177 / Expenses: Hall 1 CRAH units install (7 nr) — Materials/Plant/Sublet 578927

| ID | WBS | Activity | Duration | Start | Finish | Predecessors | Total float | Free float | Resources | Cost |
| --- | --- | --- | --- | --- | --- | --- | --- | --- | --- | --- |
|  | 4 | **Section 1 - Hall 1** |  | 2027-03-24 | 2027-04-16 |  |  |  |  |  |
| 1190 |  | Hall 1 commissioning L4 (IST, Halls 1 data halls) | 16d | 2027-03-24 | 2027-04-16 | 400, 380, 430, 390, 340, 1200, 220, 230, 480, 460, 470 | 0d |  | Commissioning Team [640 h] | 29,645 |
|  | 5 | **5** |  | 2026-05-26 | 2027-07-02 |  |  |  |  |  |
|  | 0 | **Section 2 - Groundworks** |  | 2026-05-26 | 2026-07-09 |  |  |  |  |  |
| 1203 |  | Hall 2 bulk excavation till (2,592 m3) | 12d | 2026-05-26 | 2026-06-10 | 250 | 145d | 0d | Earthworks Crew [1920 h] | 175,800 |
| 1204 |  | Hall 2 foundations | 10d | 2026-06-11 | 2026-06-25 | 1203 | 145d | 0d | Concrete Crew [1600 h] | 309,871 |
| 1205 |  | Hall 2 ground-bearing slab 250 mm (432 m3) | 9.9d | 2026-06-26 | 2026-07-09 | 1204 | 145d | 46d | Concrete Crew [1584 h] | 415,040 |
|  | 1 | **Section 2 - Hall 2** |  | 2026-09-14 | 2026-12-01 |  |  |  |  |  |
| 500 |  | Hall 2 structural steel erection | 11.5d | 2026-09-14 | 2026-09-29 | 1205, 190, 60 | 99d | 0d | Structural Steel Crew [1380 h] | 944,266 |
| 520 |  | Hall 2 precast wall panels | 14.2d | 2026-09-28 | 2026-10-15 | 200, 500 SS+10d | 99d | 0d | Steel & Precast Crew [1704 h] | 468,919 |
| 510 |  | Hall 2 metal deck | 8.8d | 2026-09-30 | 2026-10-12 | 500 | 105d | 0d | Structural Steel Crew [1056 h] | 247,574 |
| 540 |  | Hall 2 roof insulation | 8.3d | 2026-10-13 | 2026-10-22 | 510 | 105d | 0d | Waterproofing Crew [332 h] | 185,677 |
| 530 |  | Hall 2 cladding | 23.7d | 2026-10-16 | 2026-11-18 | 520 | 99d | 0d | Facade Crew [3792 h] | 535,446 |
| 550 |  | Hall 2 roof membrane | 13.2d | 2026-10-23 | 2026-11-10 | 540 | 105d | 0d | Waterproofing Crew [528 h] | 368,876 |
| 560 |  | Hall 2 acoustic louvres | 8.9d | 2026-11-19 | 2026-12-01 | 530 | 112d |  | Facade Crew [356 h] | 160,429 |
|  | 2 | **Section 2 - MEP** |  | 2026-10-14 | 2026-12-18 |  |  |  |  |  |
| 570 |  | Hall 2 chilled water & CRAH pipework | 27.3d | 2026-10-14 | 2026-11-19 | 510 SS+10d | 120d |  | Mechanical Crew [3276 h] | 2,342,506 |
| 580 |  | Hall 2 cable containment | 7.2d | 2026-11-11 | 2026-11-19 | 550 | 114d | 0d | Electrical Crew [576 h] | 1,213,754 |
| 630 |  | Hall 2 busway & electrical fit-out | 5.8d | 2026-11-20 | 2026-11-27 | 580, 210 | 114d |  | Electrical Crew [464 h] | 446,074 |
| 620 |  | Hall 2 CRAH install & UPS/battery install | 10d | 2026-12-07 | 2026-12-18 | 590, 170, 130 | 99d |  | Mechanical Crew [600 h] | 1,631,736 |
|  | 3 | **Section 2 - Hall 2** |  | 2026-11-19 | 2026-12-16 |  |  |  |  |  |
| 590 |  | Hall 2 data hall screed | 12d | 2026-11-19 | 2026-12-04 | 550, 530 | 99d | 0d | Fit-Out Crew [480 h] | 179,758 |
| 600 |  | Hall 2 cold-aisle containment | 5.4d | 2026-12-07 | 2026-12-11 | 590 | 104d |  | Fit-Out Crew [864 h] | 262,848 |
| 610 |  | Hall 2 internal partitions | 8.2d | 2026-12-07 | 2026-12-16 | 590 | 101d |  | Fit-Out Crew [1640 h] | 255,783 |

Notes:
- 1190: Duration Basis: hist-aurora-tower-act-129 / Notes: Hall 1 white-space IST; feeds S1 Taking Over. / Expenses: Hall 1 commissioning L4 (IST, Halls 1 data halls) — Materials/Plant/Sublet 29645
- 1203: Duration Basis: hist-prj-001-act-132 / Expenses: Hall 2 bulk excavation till (2,592 m3) — Materials/Plant/Sublet 175800
- 1204: Duration Basis: hist-prj-001-act-141 / Expenses: Hall 2 foundations — Materials/Plant/Sublet 309871
- 1205: Duration Basis: hist-prj-005-act-148 / Notes: Hall 2 slab 432 m3. Rate hist-prj-005-act-148. 432/(3.125x2x8) x 1.15 = 9.9. / Expenses: Hall 2 ground-bearing slab 250 mm (432 m3) — Materials/Plant/Sublet 415040
- 500: Duration Basis: hist-prj-004-act-149 / Notes: Steel: analog duration basis (40/4 x 1.15 = 11.5). / Expenses: Hall 2 structural steel erection — Materials/Plant/Sublet 944266
- 520: Duration Basis: hist-prj-001-act-146 / Expenses: Hall 2 precast wall panels — Materials/Plant/Sublet 468919
- 510: Duration Basis: hist-prj-004-act-151 / Expenses: Hall 2 metal deck — Materials/Plant/Sublet 247574
- 540: Duration Basis: hist-prj-001-act-154 / Expenses: Hall 2 roof insulation — Materials/Plant/Sublet 185677
- 530: Duration Basis: hist-prj-001-act-151 / Expenses: Hall 2 cladding — Materials/Plant/Sublet 535446
- 550: Duration Basis: hist-prj-001-act-153 / Expenses: Hall 2 roof membrane — Materials/Plant/Sublet 368876
- 560: Duration Basis: hist-prj-001-act-152 / Expenses: Hall 2 acoustic louvres — Materials/Plant/Sublet 160429
- 570: Duration Basis: hist-prj-001-act-168 / Expenses: Hall 2 chilled water & CRAH pipework — Materials/Plant/Sublet 2342506
- 580: Duration Basis: hist-prj-001-act-183 / Expenses: Hall 2 cable containment — Materials/Plant/Sublet 1213754
- 630: Duration Basis: hist-prj-001-act-183 / Expenses: Hall 2 busway & electrical fit-out — Materials/Plant/Sublet 446074
- 620: Duration Basis: hist-prj-001-act-177 / Expenses: Hall 2 CRAH install & UPS/battery install — Materials/Plant/Sublet 1631736
- 590: Duration Basis: hist-prj-001-act-204 / Expenses: Hall 2 data hall screed — Materials/Plant/Sublet 179758
- 600: Duration Basis: hist-prj-001-act-208 / Expenses: Hall 2 cold-aisle containment — Materials/Plant/Sublet 262848
- 610: Duration Basis: hist-prj-001-act-201 / Expenses: Hall 2 internal partitions — Materials/Plant/Sublet 255783

| ID | WBS | Activity | Type | Duration | Start | Finish | Predecessors | Total float | Free float | Resources | Cost |
| --- | --- | --- | --- | --- | --- | --- | --- | --- | --- | --- | --- |
|  | 4 | **Section 2 - Commissioning** |  |  | 2027-05-18 | 2027-07-01 |  |  |  |  |  |
| 640 |  | Hall 2 commissioning L4 (IST) |  | 16d | 2027-05-18 | 2027-06-08 | 620, 630, 600, 570, 610, 560, 1190 FS+20d | 0d |  | Commissioning Team [640 h] | 182,879 |
| 1213 |  | Hall 2 L5 24 h load-bank test |  | 8d | 2027-06-09 | 2027-06-18 | 640 | 81d | 0d | Commissioning Team [320 h] | 195,084 |
| 1214 |  | Hall 2 authority occupancy inspection |  | 3d | 2027-06-21 | 2027-06-23 | 1213 | 81d | 0d | Site Management [60 h] | 36,414 |
| 1215 |  | Hall 2 occupancy permit receipt |  | 5d | 2027-06-24 | 2027-07-01 | 1214 | 81d | 0d | Site Management [100 h] | 9,264 |
|  | 5 | **Section 2 - Milestones** |  |  | 2027-07-02 | 2027-07-02 |  |  |  |  |  |
| 650 |  | Section 2 Taking Over (MS-S2 2027-07-02) | milestone | 0d | 2027-07-02 | 2027-07-02 | 1215 | 81d |  |  |  |
|  | 6 | **6** |  |  | 2026-06-11 | 2027-10-01 |  |  |  |  |  |
|  | 0 | **Section 3 - Groundworks** |  |  | 2026-06-11 | 2026-07-27 |  |  |  |  |  |
| 1206 |  | Hall 3 bulk excavation till (2,592 m3) |  | 12d | 2026-06-11 | 2026-06-29 | 1203 | 198d | 0d | Earthworks Crew [1920 h] | 175,800 |
| 1207 |  | Hall 3 foundations |  | 10d | 2026-06-30 | 2026-07-13 | 1206 | 198d | 0d | Concrete Crew [1600 h] | 309,871 |
| 1208 |  | Hall 3 ground-bearing slab 250 mm (432 m3) |  | 9.9d | 2026-07-14 | 2026-07-27 | 1207 | 198d | 46d | Concrete Crew [1584 h] | 415,040 |
|  | 1 | **Section 3 - Hall 3** |  |  | 2026-09-30 | 2026-12-17 |  |  |  |  |  |
| 700 |  | Hall 3 structural steel erection |  | 11.5d | 2026-09-30 | 2026-10-15 | 1208, 190, 60, 500 SS+12d | 152d | 0d | Structural Steel Crew [1380 h] | 944,266 |
| 720 |  | Hall 3 precast wall panels |  | 14.2d | 2026-10-14 | 2026-11-02 | 200, 700 SS+10d | 152d | 0d | Steel & Precast Crew [1704 h] | 468,919 |
| 710 |  | Hall 3 metal deck |  | 8.8d | 2026-10-16 | 2026-10-28 | 700 | 158d | 0d | Structural Steel Crew [1056 h] | 247,574 |
| 740 |  | Hall 3 roof insulation |  | 8.3d | 2026-10-29 | 2026-11-09 | 710 | 158d | 0d | Waterproofing Crew [332 h] | 185,677 |
| 730 |  | Hall 3 cladding |  | 23.7d | 2026-11-03 | 2026-12-04 | 720 | 152d | 0d | Facade Crew [3792 h] | 535,446 |
| 750 |  | Hall 3 roof membrane |  | 13.2d | 2026-11-10 | 2026-11-26 | 740 | 158d | 0d | Waterproofing Crew [528 h] | 368,876 |
| 760 |  | Hall 3 acoustic louvres |  | 8.9d | 2026-12-07 | 2026-12-17 | 730 | 165d |  | Facade Crew [356 h] | 160,429 |
|  | 2 | **Section 3 - MEP** |  |  | 2026-10-30 | 2027-01-11 |  |  |  |  |  |
| 770 |  | Hall 3 chilled water & CRAH pipework |  | 27.3d | 2026-10-30 | 2026-12-07 | 710 SS+10d | 173d |  | Mechanical Crew [3276 h] | 2,342,506 |
| 780 |  | Hall 3 cable containment |  | 7.2d | 2026-11-27 | 2026-12-07 | 750 | 167d | 0d | Electrical Crew [576 h] | 1,213,754 |
| 830 |  | Hall 3 busway & electrical fit-out |  | 5.8d | 2026-12-08 | 2026-12-15 | 780, 210 | 167d |  | Electrical Crew [464 h] | 446,074 |
| 820 |  | Hall 3 CRAH install & UPS/battery install |  | 10d | 2026-12-23 | 2027-01-11 | 790, 170, 130 | 152d |  | Mechanical Crew [600 h] | 1,631,736 |

Notes:
- 640: Duration Basis: hist-aurora-tower-act-129 / Expenses: Hall 2 commissioning L4 (IST) — Materials/Plant/Sublet 182879
- 1213: Duration Basis: hist-prj-001-act-217 / Expenses: Hall 2 L5 24 h load-bank test — Materials/Plant/Sublet 195084
- 1214: Duration Basis: hist-prj-001-act-230 / Expenses: Hall 2 authority occupancy inspection — Materials/Plant/Sublet 36414
- 1215: Duration Basis: hist-prj-001-act-231 / Expenses: Hall 2 occupancy permit receipt — Materials/Plant/Sublet 9264
- 650: Duration Basis: hist-aurora-tower-act-129
- 1206: Duration Basis: hist-prj-001-act-132 / Expenses: Hall 3 bulk excavation till (2,592 m3) — Materials/Plant/Sublet 175800
- 1207: Duration Basis: hist-prj-001-act-141 / Expenses: Hall 3 foundations — Materials/Plant/Sublet 309871
- 1208: Duration Basis: hist-prj-005-act-148 / Notes: Hall 3 slab 432 m3. Rate hist-prj-005-act-148. 9.9 wd. / Expenses: Hall 3 ground-bearing slab 250 mm (432 m3) — Materials/Plant/Sublet 415040
- 700: Duration Basis: hist-prj-004-act-149 / Notes: Steel: analog duration basis (40/4 x 1.15 = 11.5). / Expenses: Hall 3 structural steel erection — Materials/Plant/Sublet 944266
- 720: Duration Basis: hist-prj-001-act-146 / Expenses: Hall 3 precast wall panels — Materials/Plant/Sublet 468919
- 710: Duration Basis: hist-prj-004-act-151 / Expenses: Hall 3 metal deck — Materials/Plant/Sublet 247574
- 740: Duration Basis: hist-prj-001-act-154 / Expenses: Hall 3 roof insulation — Materials/Plant/Sublet 185677
- 730: Duration Basis: hist-prj-001-act-151 / Expenses: Hall 3 cladding — Materials/Plant/Sublet 535446
- 750: Duration Basis: hist-prj-001-act-153 / Expenses: Hall 3 roof membrane — Materials/Plant/Sublet 368876
- 760: Duration Basis: hist-prj-001-act-152 / Expenses: Hall 3 acoustic louvres — Materials/Plant/Sublet 160429
- 770: Duration Basis: hist-prj-001-act-168 / Expenses: Hall 3 chilled water & CRAH pipework — Materials/Plant/Sublet 2342506
- 780: Duration Basis: hist-prj-001-act-183 / Expenses: Hall 3 cable containment — Materials/Plant/Sublet 1213754
- 830: Duration Basis: hist-prj-001-act-183 / Expenses: Hall 3 busway & electrical fit-out — Materials/Plant/Sublet 446074
- 820: Duration Basis: hist-prj-001-act-177 / Expenses: Hall 3 CRAH install & UPS/battery install — Materials/Plant/Sublet 1631736

| ID | WBS | Activity | Type | Duration | Start | Finish | Predecessors | Total float | Free float | Resources | Cost |
| --- | --- | --- | --- | --- | --- | --- | --- | --- | --- | --- | --- |
|  | 3 | **Section 3 - Hall 3** |  |  | 2026-12-07 | 2027-01-07 |  |  |  |  |  |
| 790 |  | Hall 3 data hall screed |  | 12d | 2026-12-07 | 2026-12-22 | 750, 730 | 152d | 0d | Fit-Out Crew [480 h] | 179,758 |
| 800 |  | Hall 3 cold-aisle containment |  | 5.4d | 2026-12-23 | 2026-12-31 | 790 | 157d |  | Fit-Out Crew [864 h] | 262,848 |
| 810 |  | Hall 3 internal partitions |  | 8.2d | 2026-12-23 | 2027-01-07 | 790 | 154d |  | Fit-Out Crew [1640 h] | 255,783 |
|  | 4 | **Section 3 - Commissioning** |  |  | 2027-08-18 | 2027-09-30 |  |  |  |  |  |
| 840 |  | Hall 3 commissioning L4 (IST) |  | 16d | 2027-08-18 | 2027-09-08 | 820, 830, 800, 770, 810, 760, 640 FS+49d | 0d |  | Commissioning Team [640 h] | 182,879 |
| 1216 |  | Hall 3 L5 24 h load-bank test |  | 8d | 2027-09-09 | 2027-09-20 | 840 | 16d | 0d | Commissioning Team [320 h] | 195,084 |
| 1217 |  | Hall 3 authority occupancy inspection |  | 3d | 2027-09-21 | 2027-09-23 | 1216 | 16d | 0d | Site Management [60 h] | 36,414 |
| 1218 |  | Hall 3 occupancy permit receipt |  | 5d | 2027-09-24 | 2027-09-30 | 1217 | 16d | 0d | Site Management [100 h] | 9,264 |
|  | 5 | **Section 3 - Milestones** |  |  | 2027-10-01 | 2027-10-01 |  |  |  |  |  |
| 850 |  | Section 3 Taking Over (MS-S3 2027-10-02) | milestone | 0d | 2027-10-01 | 2027-10-01 | 1218 | 16d |  |  |  |
|  | 7 | **7** |  |  | 2026-06-30 | 2027-10-25 |  |  |  |  |  |
|  | 0 | **Section 4 - Groundworks** |  |  | 2026-06-30 | 2026-08-12 |  |  |  |  |  |
| 1209 |  | Hall 4 bulk excavation till (2,592 m3) |  | 12d | 2026-06-30 | 2026-07-15 | 1206 | 202d | 0d | Earthworks Crew [1920 h] | 175,800 |
| 1210 |  | Hall 4 foundations |  | 10d | 2026-07-16 | 2026-07-29 | 1209 | 202d | 0d | Concrete Crew [1600 h] | 309,871 |
| 1211 |  | Hall 4 ground-bearing slab 250 mm (432 m3) |  | 9.9d | 2026-07-30 | 2026-08-12 | 1210 | 202d | 46d | Concrete Crew [1584 h] | 415,040 |
|  | 1 | **Section 4 - Hall 4** |  |  | 2026-10-16 | 2027-01-08 |  |  |  |  |  |
| 900 |  | Hall 4 structural steel erection |  | 11.5d | 2026-10-16 | 2026-11-02 | 1211, 190, 60, 700 SS+12d | 156d | 0d | Structural Steel Crew [1380 h] | 944,266 |
| 920 |  | Hall 4 precast wall panels |  | 14.2d | 2026-10-30 | 2026-11-18 | 200, 900 SS+10d | 156d | 0d | Steel & Precast Crew [1704 h] | 468,919 |
| 910 |  | Hall 4 metal deck |  | 8.8d | 2026-11-03 | 2026-11-13 | 900 | 162d | 0d | Structural Steel Crew [1056 h] | 247,574 |
| 940 |  | Hall 4 roof insulation |  | 8.3d | 2026-11-16 | 2026-11-25 | 910 | 162d | 0d | Waterproofing Crew [332 h] | 185,677 |
| 930 |  | Hall 4 cladding |  | 23.7d | 2026-11-19 | 2026-12-22 | 920 | 156d | 0d | Facade Crew [3792 h] | 535,446 |
| 950 |  | Hall 4 roof membrane |  | 13.2d | 2026-11-26 | 2026-12-14 | 940 | 162d | 0d | Waterproofing Crew [528 h] | 368,876 |
| 960 |  | Hall 4 acoustic louvres |  | 8.9d | 2026-12-23 | 2027-01-08 | 930 | 169d |  | Facade Crew [356 h] | 160,429 |

Notes:
- 790: Duration Basis: hist-prj-001-act-204 / Expenses: Hall 3 data hall screed — Materials/Plant/Sublet 179758
- 800: Duration Basis: hist-prj-001-act-208 / Expenses: Hall 3 cold-aisle containment — Materials/Plant/Sublet 262848
- 810: Duration Basis: hist-prj-001-act-201 / Expenses: Hall 3 internal partitions — Materials/Plant/Sublet 255783
- 840: Duration Basis: hist-aurora-tower-act-129 / Expenses: Hall 3 commissioning L4 (IST) — Materials/Plant/Sublet 182879
- 1216: Duration Basis: hist-prj-001-act-217 / Expenses: Hall 3 L5 24 h load-bank test — Materials/Plant/Sublet 195084
- 1217: Duration Basis: hist-prj-001-act-230 / Expenses: Hall 3 authority occupancy inspection — Materials/Plant/Sublet 36414
- 1218: Duration Basis: hist-prj-001-act-231 / Expenses: Hall 3 occupancy permit receipt — Materials/Plant/Sublet 9264
- 850: Duration Basis: hist-aurora-tower-act-129
- 1209: Duration Basis: hist-prj-001-act-132 / Expenses: Hall 4 bulk excavation till (2,592 m3) — Materials/Plant/Sublet 175800
- 1210: Duration Basis: hist-prj-001-act-141 / Expenses: Hall 4 foundations — Materials/Plant/Sublet 309871
- 1211: Duration Basis: hist-prj-005-act-148 / Notes: Hall 4 slab 432 m3. Rate hist-prj-005-act-148. 9.9 wd. / Expenses: Hall 4 ground-bearing slab 250 mm (432 m3) — Materials/Plant/Sublet 415040
- 900: Duration Basis: hist-prj-004-act-149 / Notes: Steel: analog duration basis (40/4 x 1.15 = 11.5). / Expenses: Hall 4 structural steel erection — Materials/Plant/Sublet 944266
- 920: Duration Basis: hist-prj-001-act-146 / Expenses: Hall 4 precast wall panels — Materials/Plant/Sublet 468919
- 910: Duration Basis: hist-prj-004-act-151 / Expenses: Hall 4 metal deck — Materials/Plant/Sublet 247574
- 940: Duration Basis: hist-prj-001-act-154 / Expenses: Hall 4 roof insulation — Materials/Plant/Sublet 185677
- 930: Duration Basis: hist-prj-001-act-151 / Expenses: Hall 4 cladding — Materials/Plant/Sublet 535446
- 950: Duration Basis: hist-prj-001-act-153 / Expenses: Hall 4 roof membrane — Materials/Plant/Sublet 368876
- 960: Duration Basis: hist-prj-001-act-152 / Expenses: Hall 4 acoustic louvres — Materials/Plant/Sublet 160429

| ID | WBS | Activity | Type | Duration | Start | Finish | Predecessors | Total float | Free float | Resources | Cost |
| --- | --- | --- | --- | --- | --- | --- | --- | --- | --- | --- | --- |
|  | 2 | **Section 4 - MEP** |  |  | 2026-11-17 | 2027-01-27 |  |  |  |  |  |
| 970 |  | Hall 4 chilled water & CRAH pipework |  | 27.3d | 2026-11-17 | 2026-12-23 | 910 SS+10d | 177d |  | Mechanical Crew [3276 h] | 2,342,506 |
| 980 |  | Hall 4 cable containment |  | 7.2d | 2026-12-15 | 2026-12-23 | 950 | 171d | 0d | Electrical Crew [576 h] | 1,213,754 |
| 1030 |  | Hall 4 busway & electrical fit-out |  | 5.8d | 2026-12-28 | 2027-01-05 | 980, 210 | 171d |  | Electrical Crew [464 h] | 446,074 |
| 1020 |  | Hall 4 CRAH install & UPS/battery install |  | 10d | 2027-01-14 | 2027-01-27 | 990, 170, 130 | 156d |  | Mechanical Crew [600 h] | 1,631,736 |
|  | 3 | **Section 4 - Hall 4** |  |  | 2026-12-23 | 2027-01-25 |  |  |  |  |  |
| 990 |  | Hall 4 data hall screed |  | 12d | 2026-12-23 | 2027-01-13 | 950, 930 | 156d | 0d | Fit-Out Crew [480 h] | 179,758 |
| 1000 |  | Hall 4 cold-aisle containment |  | 5.4d | 2027-01-14 | 2027-01-20 | 990 | 161d |  | Fit-Out Crew [864 h] | 262,848 |
| 1010 |  | Hall 4 internal partitions |  | 8.2d | 2027-01-14 | 2027-01-25 | 990 | 158d |  | Fit-Out Crew [1640 h] | 255,783 |
|  | 4 | **Section 4 - Commissioning** |  |  | 2027-09-09 | 2027-10-22 |  |  |  |  |  |
| 1040 |  | Hall 4 commissioning L4 (IST) |  | 16d | 2027-09-09 | 2027-09-30 | 1020, 1030, 1000, 970, 1010, 960, 840 | 0d |  | Commissioning Team [640 h] | 182,879 |
| 1219 |  | Hall 4 L5 24 h load-bank test |  | 8d | 2027-10-01 | 2027-10-12 | 1040 | 0d |  | Commissioning Team [320 h] | 195,084 |
| 1220 |  | Hall 4 authority occupancy inspection |  | 3d | 2027-10-13 | 2027-10-15 | 1219 | 0d |  | Site Management [60 h] | 36,414 |
| 1221 |  | Hall 4 occupancy permit receipt |  | 5d | 2027-10-18 | 2027-10-22 | 1220 | 0d |  | Site Management [100 h] | 9,264 |
|  | 5 | **Section 4 - Admin & external** |  |  | 2027-10-01 | 2027-10-07 |  |  |  |  |  |
| 1050 |  | Admin/NOC block fit-out (1,250 m2 ceilings) |  | 5.4d | 2027-10-01 | 2027-10-07 | 700 SS+30d, 1040 | 11d |  | Fit-Out Crew [864 h] | 3,651,152 |
|  | 6 | **Section 4 - Admin & external** |  |  | 2026-11-11 | 2027-02-22 |  |  |  |  |  |
| 1060 |  | External roads & hardstanding (9,800 m2) |  | 56.4d | 2026-11-11 | 2027-02-02 | 1212, 700 SS+30d | 170d | 0d | Civil Crew [3384 h] | 2,541,146 |
| 1070 |  | Perimeter fence (1,070 m) |  | 19.7d | 2026-12-09 | 2027-01-11 | 1060 SS+20d | 200d |  | Civil Crew [1182 h] | 509,266 |
| 1080 |  | Soft landscaping (1,250 m2) |  | 14.4d | 2027-02-03 | 2027-02-22 | 1060 | 170d |  | Landscaping Crew [576 h] | 238,992 |
|  | 7 | **Section 4 - Milestones** |  |  | 2027-10-25 | 2027-10-25 |  |  |  |  |  |
| 1090 |  | Section 4 Taking Over (MS-S4 2028-01-02) | milestone | 0d | 2027-10-25 | 2027-10-25 | 1221, 1050, 1070, 1080, 1201 | 0d |  |  |  |
|  | 8 | **Section 4 - Admin & external** |  |  | 2026-06-30 | 2026-07-27 |  |  |  |  |  |
| 1212 |  | S4 excavation & formation - admin/NOC and external areas (4,428 m3) |  | 20.4d | 2026-06-30 | 2026-07-27 | 1206 | 246d | 76d | Earthworks Crew [3264 h] | 190,594 |

Notes:
- 970: Duration Basis: hist-prj-001-act-168 / Expenses: Hall 4 chilled water & CRAH pipework — Materials/Plant/Sublet 2342506
- 980: Duration Basis: hist-prj-001-act-183 / Expenses: Hall 4 cable containment — Materials/Plant/Sublet 1213754
- 1030: Duration Basis: hist-prj-001-act-183 / Expenses: Hall 4 busway & electrical fit-out — Materials/Plant/Sublet 446074
- 1020: Duration Basis: hist-prj-001-act-177 / Expenses: Hall 4 CRAH install & UPS/battery install — Materials/Plant/Sublet 1631736
- 990: Duration Basis: hist-prj-001-act-204 / Expenses: Hall 4 data hall screed — Materials/Plant/Sublet 179758
- 1000: Duration Basis: hist-prj-001-act-208 / Expenses: Hall 4 cold-aisle containment — Materials/Plant/Sublet 262848
- 1010: Duration Basis: hist-prj-001-act-201 / Expenses: Hall 4 internal partitions — Materials/Plant/Sublet 255783
- 1040: Duration Basis: hist-aurora-tower-act-129 / Expenses: Hall 4 commissioning L4 (IST) — Materials/Plant/Sublet 182879
- 1219: Duration Basis: hist-prj-001-act-217 / Expenses: Hall 4 L5 24 h load-bank test — Materials/Plant/Sublet 195084
- 1220: Duration Basis: hist-prj-001-act-230 / Expenses: Hall 4 authority occupancy inspection — Materials/Plant/Sublet 36414
- 1221: Duration Basis: hist-prj-001-act-231 / Expenses: Hall 4 occupancy permit receipt — Materials/Plant/Sublet 9264
- 1050: Duration Basis: hist-prj-001-act-208 / Expenses: Admin/NOC block fit-out (1,250 m2 ceilings) — Materials/Plant/Sublet 3651152
- 1060: Duration Basis: hist-prj-001-act-161 / Expenses: External roads & hardstanding (9,800 m2) — Materials/Plant/Sublet 2541146
- 1070: Duration Basis: hist-prj-001-act-162 / Expenses: Perimeter fence (1,070 m) — Materials/Plant/Sublet 509266
- 1080: Duration Basis: hist-prj-001-act-164 / Expenses: Soft landscaping (1,250 m2) — Materials/Plant/Sublet 238992
- 1090: Duration Basis: hist-aurora-tower-act-129
- 1212: Duration Basis: hist-prj-001-act-132 / Expenses: S4 excavation & formation - admin/NOC and external areas (4,428 m3) — Materials/Plant/Sublet 190594

| ID | WBS | Activity | Type | Duration | Start | Finish | Predecessors | Total float |
| --- | --- | --- | --- | --- | --- | --- | --- | --- |
|  | 8 | **8** |  |  | 2027-10-25 | 2027-10-25 |  |  |
|  | 1 | **Handover** |  |  | 2027-10-25 | 2027-10-25 |  |  |
| 1202 |  | Practical completion / handover to Tenant (final) | milestone | 0d | 2027-10-25 | 2027-10-25 | 1090, 1180, 650, 850 | 0d |

Notes:
- 1202: Duration Basis: hist-aurora-tower-act-129
