# Polaris DC-1 - Aviapolis Data Campus Phase 1

Schedule from Primavera P6, 2025-12-12 to 2028-03-24, data date 2026-03-02, costs in EUR.
Must finish by 2028-03-24

## Calendars

- NordBuild Site 5d (Fin hols + wk28-30 shutdown): Mon-Fri 08:00-16:00; Sat-Sun off. Exceptions (off unless hours are given): 2026-01-01, 2026-01-06, 2026-04-03, 2026-04-06, 2026-05-01, 2026-05-14, 2026-06-19, 2026-07-06 to 2026-07-10, 2026-07-13 to 2026-07-17, 2026-07-20 to 2026-07-24, 2026-12-24 to 2026-12-25, 2027-01-01, 2027-01-06, 2027-03-26, 2027-03-29, 2027-05-06, 2027-06-25, 2027-07-12 to 2027-07-16, 2027-07-19 to 2027-07-23, 2027-07-26 to 2027-07-30, 2027-12-06, 2027-12-24, 2028-01-06.
- Design / Procurement / Authority 5d (Fin hols): Mon-Fri 08:00-16:00; Sat-Sun off. Exceptions (off unless hours are given): 2026-01-01, 2026-01-06, 2026-04-03, 2026-04-06, 2026-05-01, 2026-05-14, 2026-06-19, 2026-12-24 to 2026-12-25, 2027-01-01, 2027-01-06, 2027-03-26, 2027-03-29, 2027-05-06, 2027-06-25, 2027-12-06, 2027-12-24, 2028-01-06.
- Commissioning & handover 5d (Fin hols, works through wk28-30): Mon-Fri 08:00-16:00; Sat-Sun off. Exceptions (off unless hours are given): 2026-01-01, 2026-01-06, 2026-04-03, 2026-04-06, 2026-05-01, 2026-05-14, 2026-06-19, 2026-12-24 to 2026-12-25, 2027-01-01, 2027-01-06, 2027-03-26, 2027-03-29, 2027-05-06, 2027-06-25, 2027-12-06, 2027-12-24, 2028-01-06.
- 7-day elapsed (manufacture & third party): Mon-Sun 08:00-16:00.

## Resources

| Resource | Group | Notes |
| --- | --- | --- |
| Project & Site Management (incl. statutory supervisors) | labor | PRJ-004 Site Mgmt + Winter Safety Officer |
| Design & Engineering Team | labor | PRJ-001/004 design groups combined |
| Third Party (DNO / Offtaker / Authority) | labor | Not a NordBuild resource - shown for interface visibility |
| Procurement & Expediting | labor | PRJ-001 Procurement 4 pkg/month |
| QA/QC & Factory Inspection | labor | PRJ-004 TPI + Weld Inspector |
| Site Establishment Crew | labor | PRJ-001 500 m2/day |
| Earthworks Crew (excavator gangs) | labor | PRJ-001/004 250 m3/day/crew |
| Civil Crew (trenching, drainage, roads) | labor | PRJ-001 30 lm/day/crew |
| Drill & Blast Crew (licensed) | labor | PDC-BID-TP-001-1: 2 blasts/week |
| Concrete Crew (form/rebar/pour) | labor | PRJ-001 25 m3/day; PRJ-004 winter 22 m3/day |
| Piling / Rock-Socket Crew | labor | PRJ-001/004 3 piles/day/crew |
| Structural Steel Erection Crew | labor | PRJ-004 8 t/day winter, 10 t/day summer |
| Precast Erection Crew | labor | PRJ-001 Steel & Precast Crew, de-rated for 21 m2 wall panels |
| Roofing & Waterproofing Crew | labor | PRJ-001 150 m2/day |
| Envelope / Cladding Crew | labor | PRJ-001/004 80 m2/day/crew |
| Passive Fire Protection Crew | labor | PRJ-004 intumescent 50 m2/day/crew |
| HV / Specialist Electrical Crew | labor | PRJ-001 Transformer & MV switchgear analogue |
| Generator & Fuel Systems Crew | labor | PRJ-001 Emergency generator & UPS analogue |
| Electrical Crew (LV/containment/cabling) | labor | PRJ-001 40 points/day/crew |
| Pipefitting Crew (chilled water) | labor | PRJ-001 20 lm/day/crew |
| Mechanical Crew (plant, ductwork) | labor | PRJ-001 60 m2 duct/day/crew |
| Pipe & Duct Insulation Crew | labor | PRJ-001 30 lm/day |
| Fire Detection & Suppression Crew | labor | PRJ-001 30 heads/day/crew |
| Fit-Out Crew (partitions, finishes) | labor | PRJ-001 80 m2/day/crew |
| BMS / DCIM Crew | labor | PRJ-001 2 controllers/day; PRJ-003 1.5/day |
| ELV / Security / Data Crew | labor | PRJ-001 ICT 25 points/day |
| Commissioning Team (Mech + Elec + DC specialist) | labor | PRJ-001 0.5 systems/day, uplifted for DC scope |
| Landscaping Crew | labor | PRJ-001 100 m2/day |

## Schedule

| ID | WBS | Activity | Type | Duration | Start | Finish | Predecessors | Total float | Calendar | Resources | Cost |
| --- | --- | --- | --- | --- | --- | --- | --- | --- | --- | --- | --- |
|  | PDC.1 | **Project Management & Preliminaries** |  |  | 2026-03-03 | 2028-03-07 |  |  |  |  |  |
| PM1000 |  | Contract execution, bonds, insurances and PI cover |  | 15d | 2026-03-03 | 2026-03-23 | MS0010 | -7d | Design / Procurement / Authority 5d (Fin hols) | Project & Site Management (incl. statutory supervisors) [1080 h] | 599,943.93 |
| PM1010 |  | Mobilise project and site management team |  | 10d | 2026-03-03 | 2026-03-16 | MS0010 | -47d | Design / Procurement / Authority 5d (Fin hols) | Project & Site Management (incl. statutory supervisors) [720 h] | 104,959.22 |
| PM1020 |  | Site management, supervision and QA/QC - S1 period |  | 290d | 2026-03-17 | 2027-06-02 | PM1010 | -47d |  | Project & Site Management (incl. statutory supervisors) [20880 h] | 1,267,081.59 |
| PM1040 |  | Environmental controls, vibration and noise monitoring |  | 400d | 2026-03-17 | 2027-11-25 | PM1010 | 3d |  | Project & Site Management (incl. statutory supervisors) [28800 h] | 256,427.65 |
| PM1050 |  | Site security during construction |  | 460d | 2026-03-17 | 2028-02-22 | PM1010 | -37d |  | Project & Site Management (incl. statutory supervisors) [33120 h] | 308,680.83 |
| PM1030 |  | Site management, supervision and QA/QC - S2 to S4 period |  | 180d | 2027-06-03 | 2028-03-07 | PM1020 | -47d |  | Project & Site Management (incl. statutory supervisors) [12960 h] | 776,598.39 |
|  | PDC.2 | **Design & Engineering** |  |  | 2026-03-03 | 2026-12-30 |  |  |  |  |  |
| DE2000 |  | Mobilise design team and confirm Basis of Design (PDC-BOD-001 already issued) |  | 5d | 2026-03-03 | 2026-03-09 | MS0010 | -58d | Design / Procurement / Authority 5d (Fin hols) | Design & Engineering Team [560 h] | 69,972.82 |
| DE2010 |  | S1 Concept - architectural and structural (formalise BOD / permit drawings) |  | 15d | 2026-03-10 | 2026-03-30 | DE2000 | -58d | Design / Procurement / Authority 5d (Fin hols) | Design & Engineering Team [1680 h] |  |
| DE2015 |  | S1 Concept - electrical topology and single-line diagrams |  | 15d | 2026-03-10 | 2026-03-30 | DE2000 | -58d | Design / Procurement / Authority 5d (Fin hols) | Design & Engineering Team [1680 h] |  |
| DE2020 |  | S1 Concept - cooling strategy, free-cooling and PUE model |  | 15d | 2026-03-10 | 2026-03-30 | DE2000 | -58d | Design / Procurement / Authority 5d (Fin hols) | Design & Engineering Team [1680 h] |  |
| DE2150 |  | Substation design submission to DNO for compatibility review (GC 4.2) |  | 12d | 2026-03-10 | 2026-03-25 | DE2000 | -33d | Design / Procurement / Authority 5d (Fin hols) | Design & Engineering Team [1344 h] |  |
| MS2025 |  | M: S1 Concept Design submitted to the Engineer (MS-02) | milestone | 0d | 2026-03-31 | 2026-03-31 | DE2010, DE2015, DE2020 | -58d | Design / Procurement / Authority 5d (Fin hols) |  |  |
| DE2030 |  | Engineer review - S1 Concept (14 days, SP-20) |  | 14d | 2026-04-01 | 2026-04-22 | MS2025 | -58d | Design / Procurement / Authority 5d (Fin hols) | Design & Engineering Team [1568 h] |  |
| DE2040 |  | S2 Detailed - architectural and envelope |  | 40d | 2026-04-23 | 2026-06-22 | DE2030 | 17d | Design / Procurement / Authority 5d (Fin hols) | Design & Engineering Team [4480 h] | 296,038.84 |
| DE2045 |  | S2 Detailed - structural and foundations |  | 30d | 2026-04-23 | 2026-06-05 | DE2030 | -58d | Design / Procurement / Authority 5d (Fin hols) | Design & Engineering Team [3360 h] |  |
| DE2050 |  | S2 Detailed - electrical HV/MV/LV, UPS and generation |  | 45d | 2026-04-23 | 2026-06-29 | DE2030 | 12d | Design / Procurement / Authority 5d (Fin hols) | Design & Engineering Team [5040 h] | 807,378.64 |
| DE2055 |  | S2 Detailed - mechanical, cooling and heat recovery |  | 45d | 2026-04-23 | 2026-06-29 | DE2030 | 12d | Design / Procurement / Authority 5d (Fin hols) | Design & Engineering Team [5040 h] | 645,902.91 |
| DE2060 |  | S2 Detailed - fire engineering strategy (white-space suppression) |  | 30d | 2026-04-23 | 2026-06-05 | DE2030 | -4d | Design / Procurement / Authority 5d (Fin hols) | Design & Engineering Team [3360 h] |  |
| DE2065 |  | S2 Detailed - ELV, BMS/DCIM and security |  | 30d | 2026-04-23 | 2026-06-05 | DE2030 | 27d | Design / Procurement / Authority 5d (Fin hols) | Design & Engineering Team [3360 h] | 148,019.42 |
| DE2082 |  | S3 Construction issue - steel and precast fabrication release |  | 20d | 2026-05-18 | 2026-06-12 | DE2045 SS+15d | -54d | Design / Procurement / Authority 5d (Fin hols) | Design & Engineering Team [2240 h] |  |
| DE2080 |  | S3 Construction issue - substructure |  | 15d | 2026-06-08 | 2026-06-29 | DE2045 | -58d | Design / Procurement / Authority 5d (Fin hols) | Design & Engineering Team [1680 h] | 188,388.35 |
| DE2084 |  | Engineer review - steel and precast fabrication release (14 days) |  | 14d | 2026-06-15 | 2026-07-03 | DE2082 | -54d | Design / Procurement / Authority 5d (Fin hols) | Design & Engineering Team [1568 h] |  |
| DE2085 |  | Engineer review - S3 substructure (14 days) |  | 14d | 2026-06-30 | 2026-07-17 | DE2080 | -58d | Design / Procurement / Authority 5d (Fin hols) | Design & Engineering Team [1568 h] |  |
| DE2110 |  | HV protection coordination study - Stage 1 |  | 20d | 2026-06-30 | 2026-07-27 | DE2050 | 55d | Design / Procurement / Authority 5d (Fin hols) | Design & Engineering Team [2240 h] |  |
| MS2070 |  | M: S2 Detailed Design submitted to the Engineer (MS-03) | milestone | 0d | 2026-06-30 | 2026-06-30 | DE2040, DE2045, DE2050, DE2055, DE2060, DE2065 | 12d | Design / Procurement / Authority 5d (Fin hols) |  |  |
| DE2075 |  | Engineer review - S2 Detailed (21 days, SP-20) |  | 21d | 2026-07-01 | 2026-07-29 | MS2070 | 12d | Design / Procurement / Authority 5d (Fin hols) | Design & Engineering Team [2352 h] |  |
| DE2115 |  | DNO review and approval - protection study Stage 1 (20 wd, GC 6.3) |  | 20d | 2026-07-28 | 2026-08-24 | DE2110 | 55d | Design / Procurement / Authority 5d (Fin hols) | Third Party (DNO / Offtaker / Authority) |  |
| DE2090 |  | S3 Construction issue - superstructure and envelope |  | 25d | 2026-07-30 | 2026-09-02 | DE2075 | 12d | Design / Procurement / Authority 5d (Fin hols) | Design & Engineering Team [2800 h] | 255,669.9 |
| DE2100 |  | S3 Construction issue - MEP shop drawings and schedules |  | 40d | 2026-07-30 | 2026-09-23 | DE2075 | 252d | Design / Procurement / Authority 5d (Fin hols) | Design & Engineering Team [4480 h] | 107,650.49 |
| DE2120 |  | HV protection study - Stage 2 (Hall 2) |  | 10d | 2026-08-25 | 2026-09-07 | DE2115 | 166d | Design / Procurement / Authority 5d (Fin hols) | Design & Engineering Team [1120 h] |  |
| DE2095 |  | Engineer review - S3 superstructure/envelope (14 days) |  | 14d | 2026-09-03 | 2026-09-22 | DE2090 | 12d | Design / Procurement / Authority 5d (Fin hols) | Design & Engineering Team [1568 h] |  |
| DE2125 |  | DNO review and approval - protection study Stage 2 |  | 20d | 2026-09-08 | 2026-10-05 | DE2120 | 166d | Design / Procurement / Authority 5d (Fin hols) | Third Party (DNO / Offtaker / Authority) |  |
| DE2105 |  | Engineer review - S3 MEP (14 days) |  | 14d | 2026-09-24 | 2026-10-13 | DE2100 | 252d | Design / Procurement / Authority 5d (Fin hols) | Design & Engineering Team [1568 h] |  |
| DE2130 |  | HV protection study - Stage 3 (Hall 3) |  | 10d | 2026-10-06 | 2026-10-19 | DE2125 | 201d | Design / Procurement / Authority 5d (Fin hols) | Design & Engineering Team [1120 h] |  |
| DE2160 |  | As-built documentation and BIM model - all Sections |  | 40d | 2026-10-14 | 2026-12-08 | DE2105 | 252d | Design / Procurement / Authority 5d (Fin hols) | Design & Engineering Team [4480 h] |  |
| DE2135 |  | DNO review and approval - protection study Stage 3 |  | 20d | 2026-10-20 | 2026-11-16 | DE2130 | 201d | Design / Procurement / Authority 5d (Fin hols) | Third Party (DNO / Offtaker / Authority) |  |
| DE2140 |  | HV protection study - Stage 4 (Hall 4) |  | 10d | 2026-11-17 | 2026-11-30 | DE2135 | 214d | Design / Procurement / Authority 5d (Fin hols) | Design & Engineering Team [1120 h] |  |
| DE2145 |  | DNO review and approval - protection study Stage 4 |  | 20d | 2026-12-01 | 2026-12-30 | DE2140 | 214d | Design / Procurement / Authority 5d (Fin hols) | Third Party (DNO / Offtaker / Authority) |  |

| ID | WBS | Activity | Type | Duration | Start | Finish | Predecessors | Total float | Calendar | Resources | Cost |
| --- | --- | --- | --- | --- | --- | --- | --- | --- | --- | --- | --- |
|  | PDC.3 | **Statutory Approvals & Permits** |  |  | 2026-03-03 | 2027-02-24 |  |  |  |  |  |
| ST3000 |  | Appoint and obtain approval of statutory supervisors (Cond 1-3) |  | 15d | 2026-03-03 | 2026-03-23 | MS0010 | -16d | Design / Procurement / Authority 5d (Fin hols) | Project & Site Management (incl. statutory supervisors) [1080 h] | 101,603.41 |
| ST3010 |  | Lodge permit securities - landscaping and stormwater (Section 4 fees) |  | 10d | 2026-03-03 | 2026-03-16 | MS0010 | -6d | Design / Procurement / Authority 5d (Fin hols) | Project & Site Management (incl. statutory supervisors) [720 h] |  |
| ST3080 |  | Aviation obstacle clearance for crane operations - Fintraffic/Finavia (Cond 18, 21 d) |  | 21d | 2026-03-03 | 2026-03-31 | MS0010 | 93d | Design / Procurement / Authority 5d (Fin hols) | Third Party (DNO / Offtaker / Authority) |  |
| ST3020 |  | Notice of commencement (aloitusilmoitus) - 7 days before site works |  | 5d | 2026-03-24 | 2026-03-30 | ST3000 | -16d | Design / Procurement / Authority 5d (Fin hols) | Project & Site Management (incl. statutory supervisors) [360 h] |  |
| ST3030 |  | Commencement inspection by Building Control (Cond 5) |  | 3d | 2026-03-31 | 2026-04-02 | ST3020, ST3010 | -16d | Design / Procurement / Authority 5d (Fin hols) | Project & Site Management (incl. statutory supervisors) [216 h] | 40,641.36 |
| MS3035 |  | M: Statutory supervisors approved - site works may commence (MS-04) | milestone | 0d | 2026-04-07 | 2026-04-07 | ST3030 | -16d | Design / Procurement / Authority 5d (Fin hols) |  |  |
| ST3040 |  | Blasting plan, blast design and scaled-distance calculations |  | 15d | 2026-05-08 | 2026-05-29 | DE2045 SS+10d | -40d | Design / Procurement / Authority 5d (Fin hols) | Design & Engineering Team [1680 h] |  |
| ST3050 |  | Pre-condition survey (katselmus) of neighbours, photographic record (Cond 10) |  | 10d | 2026-06-01 | 2026-06-12 | ST3040 | -30d | Design / Procurement / Authority 5d (Fin hols) | Project & Site Management (incl. statutory supervisors) [720 h] |  |
| ST3060 |  | Blasting permit - Vantaa rescue authority (Cond 9) and louhintailmoitus |  | 20d | 2026-06-01 | 2026-06-29 | ST3040 | -40d | Design / Procurement / Authority 5d (Fin hols) | Third Party (DNO / Offtaker / Authority) |  |
| ST3090 |  | Fire engineering submission and authority approval - white-space suppression |  | 40d | 2026-06-08 | 2026-08-03 | DE2060 | -4d | Design / Procurement / Authority 5d (Fin hols) | Third Party (DNO / Offtaker / Authority) |  |
| ST3070 |  | Neighbour written notice - 7 days before blasting (Cond 12) |  | 5d | 2026-06-30 | 2026-07-06 | ST3050, ST3060 | -40d | Design / Procurement / Authority 5d (Fin hols) | Project & Site Management (incl. statutory supervisors) [360 h] |  |
| ST3100 |  | Building Control exemption application - extended-hours commissioning (Cond 15) |  | 30d | 2026-06-30 | 2026-08-10 | DE2055 | 168d | Design / Procurement / Authority 5d (Fin hols) | Project & Site Management (incl. statutory supervisors) [2160 h] |  |
| MS3075 |  | M: Blasting permit and pre-condition survey complete (MS-05) | milestone | 0d | 2026-07-07 | 2026-07-07 | ST3070 | -40d | Design / Procurement / Authority 5d (Fin hols) |  |  |
| MS3105 |  | M: Extended-hours commissioning exemption obtained (enables 24 h L5 tests) | milestone | 0d | 2026-08-11 | 2026-08-11 | ST3100 | 168d | Design / Procurement / Authority 5d (Fin hols) |  |  |
| ST3110 |  | Foundation inspection - Building Control (Cond 5) |  | 2d | 2026-10-15 | 2026-10-16 | S1F160 | -48d | Design / Procurement / Authority 5d (Fin hols) | Project & Site Management (incl. statutory supervisors) [144 h] | 20,320.68 |
| ST3120 |  | Structural frame inspection - Building Control (Cond 5) |  | 2d | 2026-12-09 | 2026-12-10 | S1S030 | -45d | Design / Procurement / Authority 5d (Fin hols) | Project & Site Management (incl. statutory supervisors) [144 h] | 20,320.68 |
| ST3130 |  | Fire compartmentation inspection - Building Control (Cond 5) |  | 2d | 2027-02-23 | 2027-02-24 | S1S200 | 39d | Design / Procurement / Authority 5d (Fin hols) | Project & Site Management (incl. statutory supervisors) [144 h] | 20,320.68 |
|  | PDC.4 | **Procurement & Manufacture** |  |  | 2025-12-15 | 2027-05-07 |  |  |  |  |  |
| PR4000 |  | ADVANCE PROCUREMENT INSTRUCTION - release 110/20 kV transformer order (LT-01) |  | 10d | 2025-12-15 | 2025-12-26 | MS0000 | -30d | Design / Procurement / Authority 5d (Fin hols) | Procurement & Expediting [240 h] |  |
| PR4005 |  | LT-01 110/20 kV transformers (2 nr, 16 MVA) - manufacture and delivery (52 weeks) |  | 364d | 2025-12-27 | 2026-12-25 | PR4000 | -40d | 7-day elapsed (manufacture & third party) | Third Party (DNO / Offtaker / Authority) |  |
| PR4020 |  | TP-001 Earthworks/blasting/substructure - tender, evaluation and award |  | 20d | 2026-03-03 | 2026-03-30 | MS0010 | -12d | Design / Procurement / Authority 5d (Fin hols) | Procurement & Expediting [480 h] |  |
| PR4030 |  | TP-002 Structure - tender, evaluation and award |  | 20d | 2026-03-03 | 2026-03-30 | MS0010 | 10d | Design / Procurement / Authority 5d (Fin hols) | Procurement & Expediting [480 h] |  |
| PR4070 |  | TP-005 Mechanical - tender, evaluation and award |  | 25d | 2026-03-03 | 2026-04-08 | MS0010 | 31d | Design / Procurement / Authority 5d (Fin hols) | Procurement & Expediting [600 h] |  |
| PR4100 |  | TP-006 Electrical - tender, evaluation and award (balance of package) |  | 25d | 2026-03-03 | 2026-04-08 | MS0010 | -41d | Design / Procurement / Authority 5d (Fin hols) | Procurement & Expediting [600 h] |  |
| PR4075 |  | LT-07 Chillers, 4 nr (26 weeks) |  | 182d | 2026-04-09 | 2026-10-07 | PR4070 | 47d | 7-day elapsed (manufacture & third party) | Third Party (DNO / Offtaker / Authority) |  |
| PR4080 |  | LT-08 Dry coolers / adiabatic units, 10 nr (22 weeks) |  | 154d | 2026-04-09 | 2026-09-09 | PR4070 | 120d | 7-day elapsed (manufacture & third party) | Third Party (DNO / Offtaker / Authority) |  |
| PR4085 |  | LT-09 CRAH units, 28 nr (22 weeks) |  | 154d | 2026-04-09 | 2026-09-09 | PR4070 | 97d | 7-day elapsed (manufacture & third party) | Third Party (DNO / Offtaker / Authority) |  |
| PR4090 |  | LT-10 Waste-heat recovery plant, 4 MW (30 weeks) |  | 210d | 2026-04-09 | 2026-11-04 | PR4070 | 246d | 7-day elapsed (manufacture & third party) | Third Party (DNO / Offtaker / Authority) |  |
| PR4105 |  | LT-02 20 kV switchgear and protection (38 weeks) |  | 266d | 2026-04-09 | 2026-12-30 | PR4100, DE2150 | -59d | 7-day elapsed (manufacture & third party) | Third Party (DNO / Offtaker / Authority) |  |
| PR4110 |  | LT-03 Standby generators, 8 nr at 2.5 MVA (40 weeks) |  | 280d | 2026-04-09 | 2027-01-13 | PR4100 | -51d | 7-day elapsed (manufacture & third party) | Third Party (DNO / Offtaker / Authority) |  |
| PR4115 |  | LT-04 UPS modules, 16 nr at 1000 kVA (30 weeks) |  | 210d | 2026-04-09 | 2026-11-04 | PR4100 | 39d | 7-day elapsed (manufacture & third party) | Third Party (DNO / Offtaker / Authority) |  |
| PR4125 |  | LT-06 Overhead busway (20 weeks) |  | 140d | 2026-04-09 | 2026-08-26 | PR4100 | 139d | 7-day elapsed (manufacture & third party) | Third Party (DNO / Offtaker / Authority) |  |
| PR4050 |  | TP-003 Envelope - tender, evaluation and award |  | 20d | 2026-04-23 | 2026-05-22 | DE2030 | 76d | Design / Procurement / Authority 5d (Fin hols) | Procurement & Expediting [480 h] |  |
| PR4150 |  | TP-007 ELV/BMS/fire - tender, evaluation and award |  | 20d | 2026-04-23 | 2026-05-22 | DE2030 | 76d | Design / Procurement / Authority 5d (Fin hols) | Procurement & Expediting [480 h] |  |
| PR4055 |  | LT-13 Acoustic louvres (16 weeks) |  | 112d | 2026-05-23 | 2026-09-11 | PR4050 | 109d | 7-day elapsed (manufacture & third party) | Third Party (DNO / Offtaker / Authority) |  |
| PR4155 |  | LT-14 BMS/DCIM hardware and licences (16 weeks) |  | 112d | 2026-05-23 | 2026-09-11 | PR4150 | 118d | 7-day elapsed (manufacture & third party) | Third Party (DNO / Offtaker / Authority) |  |
| PR4060 |  | TP-004 Finishes and containment - tender, evaluation and award |  | 20d | 2026-06-23 | 2026-07-20 | DE2040 | 158d | Design / Procurement / Authority 5d (Fin hols) | Procurement & Expediting [480 h] |  |
| PR4035 |  | LT-11 Steel fabrication batch 1 - Hall 1, substation, generator, spine (18 wk) |  | 126d | 2026-07-04 | 2026-11-06 | PR4030, DE2084 | -79d | 7-day elapsed (manufacture & third party) | Third Party (DNO / Offtaker / Authority) |  |
| PR4040 |  | LT-12 Precast batch 1 - Hall 1, substation, generator, spine (16 wk) |  | 112d | 2026-07-04 | 2026-10-23 | PR4030, DE2084 | -39d | 7-day elapsed (manufacture & third party) | Third Party (DNO / Offtaker / Authority) |  |
| PR4170 |  | TP-008 External works, security and fibre - tender, evaluation and award |  | 20d | 2026-07-30 | 2026-08-26 | DE2075 | 261d | Design / Procurement / Authority 5d (Fin hols) | Procurement & Expediting [480 h] |  |
| PR4120 |  | LT-05 Battery systems, lithium-ion (24 weeks) |  | 168d | 2026-08-04 | 2027-01-18 | PR4100, ST3090 | -6d | 7-day elapsed (manufacture & third party) | Third Party (DNO / Offtaker / Authority) |  |
| PR4160 |  | LT-15 Suppression system, data halls (20 weeks) |  | 140d | 2026-08-04 | 2026-12-21 | PR4150, ST3090 | 36d | 7-day elapsed (manufacture & third party) | Third Party (DNO / Offtaker / Authority) |  |
| PR4095 |  | L1 FAT - chillers (witnessed) |  | 8d | 2026-10-12 | 2026-10-21 | PR4075 FF+10d | 47d | Design / Procurement / Authority 5d (Fin hols) | QA/QC & Factory Inspection [192 h] | 37,513.97 |
| PR4041 |  | LT-12 Precast batch 2 - Hall 2 (64 panels at 200 m2/day) |  | 30d | 2026-10-24 | 2026-11-22 | PR4040 | -25d | 7-day elapsed (manufacture & third party) | Third Party (DNO / Offtaker / Authority) |  |
| PR4036 |  | LT-11 Steel fabrication batch 2 - Hall 2 (112 t at 15 t/week) |  | 53d | 2026-11-07 | 2026-12-29 | PR4035 | -79d | 7-day elapsed (manufacture & third party) | Third Party (DNO / Offtaker / Authority) |  |
| PR4135 |  | L1 FAT - UPS modules (witnessed) |  | 8d | 2026-11-09 | 2026-11-18 | PR4115 FF+10d | 27d | Design / Procurement / Authority 5d (Fin hols) | QA/QC & Factory Inspection [192 h] | 56,270.96 |
| PR4042 |  | LT-12 Precast batch 3 - Hall 3 |  | 30d | 2026-11-23 | 2026-12-22 | PR4041 | 23d | 7-day elapsed (manufacture & third party) | Third Party (DNO / Offtaker / Authority) |  |
| PR4043 |  | LT-12 Precast batch 4 - Hall 4 |  | 30d | 2026-12-23 | 2027-01-21 | PR4042 | 52d | 7-day elapsed (manufacture & third party) | Third Party (DNO / Offtaker / Authority) |  |
| PR4037 |  | LT-11 Steel fabrication batch 3 - Hall 3 (112 t at 15 t/week) |  | 53d | 2026-12-30 | 2027-02-20 | PR4036 | -73d | 7-day elapsed (manufacture & third party) | Third Party (DNO / Offtaker / Authority) |  |
| PR4140 |  | L1 FAT - 20 kV switchgear (witnessed) |  | 8d | 2027-01-05 | 2027-01-15 | PR4105 FF+10d | -11d | Design / Procurement / Authority 5d (Fin hols) | QA/QC & Factory Inspection [192 h] | 50,018.63 |
| PR4010 |  | L1 FAT - 110/20 kV transformers (witnessed) |  | 10d | 2027-01-07 | 2027-01-20 | PR4005 FF+15d | -14d | Design / Procurement / Authority 5d (Fin hols) | QA/QC & Factory Inspection [240 h] | 75,027.95 |
| PR4130 |  | L1 FAT - standby generators (witnessed) |  | 10d | 2027-01-18 | 2027-01-29 | PR4110 FF+12d | -21d | Design / Procurement / Authority 5d (Fin hols) | QA/QC & Factory Inspection [240 h] | 93,784.93 |
| PR4038 |  | LT-11 Steel fabrication batch 4 - Hall 4 and admin/NOC (162 t) |  | 76d | 2027-02-21 | 2027-05-07 | PR4037 | -73d | 7-day elapsed (manufacture & third party) | Third Party (DNO / Offtaker / Authority) |  |

| ID | WBS | Activity | Duration | Start | Finish | Predecessors | Total float | Resources | Cost |
| --- | --- | --- | --- | --- | --- | --- | --- | --- | --- |
|  | PDC.5 | **Enabling Works & Site Establishment** |  | 2026-04-08 | 2026-06-04 |  |  |  |  |
| EN5000 |  | Site establishment - offices, welfare, hoarding and site compound | 15d | 2026-04-08 | 2026-04-28 | MS3035, PR4020, PM1000 | -16d | Site Establishment Crew [960 h] | 913,463.02 |
| EN5010 |  | Temporary power, water and telecoms | 10d | 2026-04-15 | 2026-04-28 | EN5000 SS+5d | -1d | Site Establishment Crew [640 h] | 557,367.26 |
| EN5020 |  | Site clearance and topsoil strip, full plot (26,565 m2 / 7,970 m3) | 16d | 2026-04-15 | 2026-05-07 | EN5000 SS+5d | -16d | Earthworks Crew (excavator gangs) [2048 h] | 168,512.26 |
| EN5030 |  | Site access from Tikkurilantie, haul road and traffic management | 15d | 2026-04-22 | 2026-05-13 | EN5020 SS+5d | 50d | Civil Crew (trenching, drainage, roads) [1440 h] | 263,174.32 |
| EN5040 |  | Archaeological watching brief - NW corner made ground (Cond 24 / SS 7b) | 10d | 2026-05-08 | 2026-05-22 | EN5020 | -16d | Third Party (DNO / Offtaker / Authority) | 20,552.6 |
| EN5060 |  | Sulphide-bearing material - confirmatory testing, segregation and waste routing (BH-12) | 10d | 2026-05-08 | 2026-05-22 | EN5020 | 91d | Earthworks Crew (excavator gangs) [640 h] | 144,991.86 |
| EN5050 |  | Excavate and remove unrecorded made ground, NW corner (1,620 m3, provisional) | 7d | 2026-05-12 | 2026-05-21 | EN5040 SS+2d | -16d | Earthworks Crew (excavator gangs) [448 h] | 82,210.38 |
| EN5070 |  | Erect tower and mobile cranes (aviation clearance held on site) | 8d | 2026-05-15 | 2026-05-26 | EN5030, ST3080 | 50d | Site Establishment Crew [512 h] | 331,904.46 |
| EN5080 |  | Two diverse fibre entry routes and ducts (1,240 m) | 15d | 2026-05-15 | 2026-06-04 | EN5030 | 155d | Civil Crew (trenching, drainage, roads) [720 h] | 298,842.64 |
| EN5090 |  | Perimeter fencing, detection and ANPR vehicle gate (1,070 m) | 15d | 2026-05-15 | 2026-06-04 | EN5030 | 149d | Civil Crew (trenching, drainage, roads) [720 h] | 330,936.09 |
|  | PDC.6 | **Section 1 - Hall 1 & Shared Infrastructure** |  | 2026-07-27 | 2027-07-14 |  |  |  |  |
|  | PDC.6.1 | **S1 Substructure** |  | 2026-07-27 | 2026-11-18 |  |  |  |  |
| S1F000 |  | Bulk excavation - primary substation zone (1,650 m3) | 4d | 2026-07-27 | 2026-07-30 | EN5020, DE2085, EN5010, EN5050 | -46d | Earthworks Crew (excavator gangs) [512 h] | 45,731.75 |
| S1F010 |  | Bulk excavation - generator compound, till above rock (1,000 m3) | 3d | 2026-07-27 | 2026-07-29 | EN5020, DE2085 | -41d | Earthworks Crew (excavator gangs) [384 h] | 27,977.07 |
| S1F040 |  | Bulk excavation - Hall 1 (2,600 m3) | 6d | 2026-07-27 | 2026-08-03 | EN5020, DE2085 | -48d | Earthworks Crew (excavator gangs) [768 h] | 72,632.78 |
| S1F070 |  | Dewatering - well-points and sump pumping, perched water in till | 5d | 2026-07-29 | 2026-08-04 | S1F000 SS+2d | -46d | Civil Crew (trenching, drainage, roads) [240 h] | 217,487.79 |
| S1F020 |  | Controlled blasting - generator compound (1,141 m3 rock, 2 blasts/week) | 15d | 2026-07-30 | 2026-08-19 | S1F010, MS3075 | -41d | Drill & Blast Crew (licensed) [720 h] | 165,410.78 |
| S1F050 |  | Bulk excavation - shared MEP spine, full length (4,350 m3) | 9d | 2026-08-04 | 2026-08-14 | S1F040 | -48d | Earthworks Crew (excavator gangs) [1152 h] | 121,592.66 |
| S1F080 |  | Substation cable basement - excavation, waterproofing and drainage (1,100 m2) | 10d | 2026-08-05 | 2026-08-18 | S1F000, S1F070 | -46d | Concrete Crew (form/rebar/pour) [800 h] | 159,491.05 |
| S1F110 |  | Pad foundations - Hall 1 (grid E-H / 2-6) | 12d | 2026-08-05 | 2026-08-20 | S1F040, S1F070 | -38d | Concrete Crew (form/rebar/pour) [1920 h] | 106,931.5 |
| S1F030 |  | Muck away and trim blasted rock - generator compound | 8d | 2026-08-06 | 2026-08-17 | S1F020 SS+5d | -41d | Earthworks Crew (excavator gangs) [512 h] |  |
| S1F060 |  | Bulk excavation - gatehouse and site access structures (500 m3) | 2d | 2026-08-17 | 2026-08-18 | S1F050 | 23d | Earthworks Crew (excavator gangs) [128 h] | 13,988.54 |
| S1F120 |  | Pad foundations - shared MEP spine | 14d | 2026-08-17 | 2026-09-03 | S1F050 | -48d | Concrete Crew (form/rebar/pour) [2240 h] | 122,971.22 |
| S1F100 |  | Direct-to-rock and rock-socketed piers - generator compound (10 nr) | 6d | 2026-08-18 | 2026-08-25 | S1F030 | -41d | Piling / Rock-Socket Crew [576 h] | 166,514.09 |
| S1F090 |  | Pad and strip foundations - primary substation | 10d | 2026-08-19 | 2026-09-01 | S1F080 | -46d | Concrete Crew (form/rebar/pour) [1600 h] | 90,891.77 |
| S1F130 |  | Ground beams and pile caps - Section 1 (793 m) | 12d | 2026-09-04 | 2026-09-21 | S1F090, S1F110, S1F100, S1F120 | -48d | Concrete Crew (form/rebar/pour) [1920 h] | 346,893.03 |
| S1F140 |  | Underground services, drainage and service trenches - Section 1 | 15d | 2026-09-11 | 2026-10-01 | S1F130 SS+5d | -48d | Civil Crew (trenching, drainage, roads) [1440 h] |  |
| S1F150 |  | Sub-base, capping and geotextile - Section 1 (7,028 m2) | 10d | 2026-09-23 | 2026-10-06 | S1F130, S1F140 SS+8d | -48d | Civil Crew (trenching, drainage, roads) [960 h] | 360,580.45 |
| S1F160 |  | Ground slab - primary substation (275 m3) | 6d | 2026-10-07 | 2026-10-14 | S1F150 | -48d | Concrete Crew (form/rebar/pour) [960 h] | 196,750.75 |
| S1F170 |  | Ground slab - generator compound (238 m3) | 5d | 2026-10-07 | 2026-10-13 | S1F100, S1F150 | -15d | Concrete Crew (form/rebar/pour) [800 h] | 169,297.16 |
| S1F180 |  | Ground slab - Hall 1, FM2 flatness (432 m3) | 10d | 2026-10-19 | 2026-10-30 | S1F150, S1F160, ST3110 | -48d | Concrete Crew (form/rebar/pour) [1600 h] | 308,852.92 |
| S1F190 |  | Ground slab - shared MEP spine (725 m3) | 15d | 2026-10-26 | 2026-11-13 | S1F180 SS+5d | -48d | Concrete Crew (form/rebar/pour) [2400 h] | 517,042.66 |
| S1F200 |  | Ground slab - gatehouse (88 m3) | 3d | 2026-11-16 | 2026-11-18 | S1F190, S1F060 | -40d | Concrete Crew (form/rebar/pour) [240 h] | 61,770.58 |

| ID | WBS | Activity | Type | Duration | Start | Finish | Predecessors | Total float | Resources | Cost |
| --- | --- | --- | --- | --- | --- | --- | --- | --- | --- | --- |
|  | PDC.6.2 | **S1 Superstructure & Envelope** |  |  | 2026-11-09 | 2027-02-26 |  |  |  |  |
| S1S000 |  | Steel erection - primary substation and switchgear building (35 t) |  | 6d | 2026-11-09 | 2026-11-16 | S1F160, PR4035, EN5070 | -35d | Structural Steel Erection Crew [480 h] | 260,934.98 |
| S1S010 |  | Steel erection - generator compound enclosure (20 t) |  | 4d | 2026-11-09 | 2026-11-12 | S1F170, PR4035 | -33d | Structural Steel Erection Crew [320 h] | 184,835.92 |
| S1S020 |  | Steel erection - Hall 1 frame, 18 m lattice trusses (112 t) |  | 13d | 2026-11-09 | 2026-11-25 | S1F180, PR4035, EN5070 | -52d | Structural Steel Erection Crew [1040 h] | 812,351.68 |
| S1S080 |  | Precast wall panels - generator enclosure (38 nr, acoustic) |  | 8d | 2026-11-13 | 2026-11-24 | S1S010, PR4040 | -22d | Precast Erection Crew [384 h] | 250,464.85 |
| S1S050 |  | In-situ RC blast/fire separation walls - substation (640 m3) |  | 18d | 2026-11-17 | 2026-12-10 | S1S000 | -29d | Concrete Crew (form/rebar/pour) [2880 h] | 476,084.06 |
| S1S070 |  | Precast wall panels - primary substation (40 nr) |  | 8d | 2026-11-17 | 2026-11-26 | S1S000, PR4040 | -24d | Precast Erection Crew [384 h] | 260,098.11 |
| S1S030 |  | Steel erection - shared MEP spine and mezzanine (120 t) |  | 14d | 2026-11-19 | 2026-12-08 | S1F190, S1S020 SS+8d | -51d | Structural Steel Erection Crew [1120 h] | 718,087.26 |
| S1S040 |  | Steel erection - gatehouse (11 t) |  | 3d | 2026-11-19 | 2026-11-23 | S1F200 | -40d | Structural Steel Erection Crew [240 h] | 57,074.3 |
| S1S060 |  | Precast wall panels - Hall 1 (64 nr, EI 120 between halls) |  | 13d | 2026-11-26 | 2026-12-14 | S1S020, PR4040 | -52d | Precast Erection Crew [624 h] | 442,609.4 |
| S1S100 |  | Metal deck, purlins and side rails - Hall 1 (1,728 m2) |  | 4d | 2026-11-26 | 2026-12-01 | S1S020 | -43d | Structural Steel Erection Crew [320 h] | 124,885.69 |
| S1S090 |  | Precast wall panels - shared MEP spine (70 nr, 2nd crew) |  | 14d | 2026-12-09 | 2026-12-30 | S1S030 | -46d | Precast Erection Crew [672 h] | 452,763.38 |
| S1S110 |  | Metal deck, purlins and side rails - substation/generator/spine/gatehouse (5,300 m2) |  | 11d | 2026-12-09 | 2026-12-23 | S1S030, S1S000, S1S010, S1S040 | -51d | Structural Steel Erection Crew [880 h] | 382,057.72 |
| S1S120 |  | Warm roof build-up - Hall 1 (1,728 m2, U=0.09) |  | 12d | 2026-12-15 | 2027-01-04 | S1S100, S1S060 | -52d | Roofing & Waterproofing Crew [384 h] | 183,923.12 |
| S1S150 |  | Insulated composite cladding - Hall 1 (1,651 m2, U=0.17) |  | 21d | 2026-12-22 | 2027-01-25 | S1S060, S1S120 SS+5d, ST3120, DE2095 | -52d | Envelope / Cladding Crew [1008 h] | 306,673.84 |
| S1S130 |  | Warm roof build-up - substation/generator/spine/gatehouse (5,300 m2) |  | 18d | 2026-12-28 | 2027-01-22 | S1S110 | -51d | Roofing & Waterproofing Crew [1152 h] | 562,668.49 |
| S1S160 |  | Cladding - substation/generator/spine/gatehouse (4,300 m2) |  | 27d | 2026-12-31 | 2027-02-09 | S1S090, S1S070, S1S080 | -46d | Envelope / Cladding Crew [2592 h] | 750,812.83 |
| S1S210 |  | Passive fire protection to steel - spine and substation (2,800 m2) |  | 28d | 2027-01-18 | 2027-02-24 | S1S160 SS+10d | -25d | Passive Fire Protection Crew [1344 h] | 133,567.15 |
| S1S140 |  | Roof safety line, walkways, access hatches and obstacle lighting (Cond 17) |  | 10d | 2027-01-25 | 2027-02-05 | S1S130, S1S120 | -12d | Roofing & Waterproofing Crew [320 h] | 270,853.13 |
| S1S190 |  | Rainwater goods, outlets and syphonic drainage - Section 1 |  | 10d | 2027-01-25 | 2027-02-05 | S1S130 | -18d | Roofing & Waterproofing Crew [320 h] | 234,094.49 |
| S1S170 |  | Acoustic louvres - Hall 1 cooling intake/discharge (310 m2) |  | 8d | 2027-01-26 | 2027-02-04 | S1S150, PR4055 | -17d | Envelope / Cladding Crew [384 h] | 143,939.09 |
| S1S200 |  | Passive fire protection to steel - Hall 1 (2,000 m2 intumescent) |  | 20d | 2027-01-26 | 2027-02-22 | S1S150 | -52d | Passive Fire Protection Crew [960 h] | 95,271.67 |
| S1S180 |  | Personnel and equipment doors - Section 1 (18 nr incl. 3.0 x 3.5 m) |  | 6d | 2027-02-10 | 2027-02-17 | S1S150, S1S160 | -26d | Envelope / Cladding Crew [288 h] | 138,323.04 |
| S1S220 |  | Airtightness works and q50 test - Hall 1 |  | 6d | 2027-02-18 | 2027-02-25 | S1S170, S1S180, S1S190 | -26d | Envelope / Cladding Crew [288 h] | 58,039.96 |
| MS1S230 |  | M: Hall 1 and shared infrastructure weathertight, fire protection complete | milestone | 0d | 2027-02-26 | 2027-02-26 | S1S220, S1S140, S1S160, S1S200, S1S210 | -26d |  |  |

| ID | WBS | Activity | Type | Duration | Start | Finish | Predecessors | Total float | Constraint | Calendar | Resources | Cost |
| --- | --- | --- | --- | --- | --- | --- | --- | --- | --- | --- | --- | --- |
|  | PDC.6.3 | **S1 Primary Substation & HV** |  |  | 2026-08-25 | 2027-04-08 |  |  |  |  |  |  |
| S1H070 |  | Serve 16 weeks notice on the DNO for the Stage 1 outage window (GC 7.3) |  | 5d | 2026-08-25 | 2026-08-31 | DE2115 | 55d |  | Design / Procurement / Authority 5d (Fin hols) | Project & Site Management (incl. statutory supervisors) [360 h] |  |
| S1H000 |  | 110 kV termination structure, metering compound and protection enclosure |  | 20d | 2026-12-11 | 2027-01-13 | S1S050, S1S070 | 34d |  |  | HV / Specialist Electrical Crew [960 h] | 1,143,675.7 |
| S1H010 |  | Substation earthing system and common bonding network |  | 10d | 2026-12-11 | 2026-12-28 | S1S050 | -29d |  |  | HV / Specialist Electrical Crew [480 h] | 284,091.13 |
| S1H020 |  | Deliver, offload and set 110/20 kV transformers (2 nr, 16 MVA) |  | 15d | 2026-12-29 | 2027-01-20 | PR4005, S1S070, S1H010 | -29d |  |  | HV / Specialist Electrical Crew [720 h] | 1,725,435.84 |
| S1H040 |  | 20 kV ring main switchboard and protection relays (14 panels) |  | 25d | 2026-12-31 | 2027-02-05 | PR4105, S1S050 | -41d |  |  | HV / Specialist Electrical Crew [1200 h] | 982,621.09 |
| S1H030 |  | Transformer oil filling, drying out and site acceptance testing |  | 10d | 2027-01-21 | 2027-02-03 | S1H020 | -29d |  |  | HV / Specialist Electrical Crew [480 h] | 739,472.51 |
| S1H050 |  | HV cabling and terminations - transformers to 20 kV ring |  | 25d | 2027-02-08 | 2027-03-12 | S1H030, S1H040 | -31d |  |  | HV / Specialist Electrical Crew [1200 h] | 421,123.33 |
| S1H060 |  | DNO revenue metering, telemetry and check metering commissioning |  | 8d | 2027-03-15 | 2027-03-24 | S1H000, S1H050 | -8d |  |  | HV / Specialist Electrical Crew [384 h] | 381,225.23 |
| MS1H080 |  | M: DNO Stage 1 energisation, 6.5 MVA (MS-09 / GC 7.4) | milestone | 0d | 2027-03-25 | 2027-03-25 | S1H060, DE2115, S1H070 FS+80d | -8d | start on 2027-03-12 |  |  |  |
| S1H090 |  | Post-energisation HV protection intertrip and discrimination proving |  | 8d | 2027-03-30 | 2027-04-08 | MS1H080 | -8d |  |  | HV / Specialist Electrical Crew [384 h] | 60,022.36 |
|  | PDC.6.4 | **S1 Generator Compound** |  |  | 2026-11-13 | 2027-03-16 |  |  |  |  |  |  |
| S1G020 |  | Bulk fuel storage, bunding, fuel polishing and day tanks (48 h) |  | 25d | 2026-11-13 | 2026-12-17 | S1F170, S1S010 | 31d |  |  | Generator & Fuel Systems Crew [1200 h] | 1,109,208.75 |
| S1G030 |  | Oil separators (class I) to generator compound drainage (Cond 20) |  | 8d | 2026-11-27 | 2026-12-08 | S1G020 SS+10d | 38d |  |  | Civil Crew (trenching, drainage, roads) [384 h] | 229,974.93 |
| S1G000 |  | Deliver, set and align standby generators (8 nr, 2.5 MVA) |  | 24d | 2027-01-14 | 2027-02-16 | PR4110, S1S080 | -33d |  |  | Generator & Fuel Systems Crew [1152 h] | 6,172,715.4 |
| S1G010 |  | Acoustic enclosures, exhaust stacks and attenuation to 45 dB(A) boundary |  | 15d | 2027-01-26 | 2027-02-15 | S1G000 SS+8d | -7d |  |  | Generator & Fuel Systems Crew [720 h] | 2,057,571.8 |
| S1G040 |  | Generator paralleling switchgear, ATS and control system |  | 20d | 2027-02-17 | 2027-03-16 | S1G000, S1H040 | -33d |  |  | Generator & Fuel Systems Crew [960 h] | 965,074.28 |
| S1G050 |  | Generator LV cabling, containment and connection to the 20 kV ring |  | 15d | 2027-02-24 | 2027-03-16 | S1G040 SS+5d | -33d |  |  | Electrical Crew (LV/containment/cabling) [960 h] | 413,603.27 |
|  | PDC.6.5 | **S1 Shared MEP Spine & Cooling Yard** |  |  | 2026-11-16 | 2027-04-06 |  |  |  |  |  |  |
| S1M010 |  | Install chillers, 4 nr (N+1) - shared backup-chiller zone |  | 12d | 2026-11-16 | 2026-12-01 | PR4075, S1F190 | 6d |  |  | Mechanical Crew (plant, ductwork) [768 h] | 2,189,947.86 |
| S1M020 |  | Install dry coolers / adiabatic units - shared zone and Hall 1 (4 nr) |  | 10d | 2026-11-16 | 2026-11-27 | PR4080, S1F190 | 35d |  |  | Mechanical Crew (plant, ductwork) [640 h] | 1,184,500.1 |
| S1M030 |  | Buffer vessels, pressurisation units and glycol dosing |  | 12d | 2026-12-02 | 2026-12-17 | S1M010 | 6d |  |  | Mechanical Crew (plant, ductwork) [768 h] | 800,570.56 |
| S1M060 |  | Water treatment and adiabatic make-up plant (WUE cap 12,000 m3/yr) |  | 15d | 2026-12-18 | 2027-01-13 | S1M030 | 6d |  |  | Mechanical Crew (plant, ductwork) [960 h] | 895,261.7 |
| S1E000 |  | 20 kV distribution along the shared spine and hall riser busway drops |  | 25d | 2027-01-18 | 2027-02-19 | S1H040 SS+10d, S1S090 | -41d |  |  | Electrical Crew (LV/containment/cabling) [3200 h] |  |
| S1E010 |  | Spine containment, cabling, small power and lighting |  | 30d | 2027-01-25 | 2027-03-05 | S1S160 SS+15d | -8d |  |  | Electrical Crew (LV/containment/cabling) [3840 h] | 467,914.81 |
| S1E020 |  | Site earthing, bonding and lightning protection |  | 12d | 2027-01-25 | 2027-02-09 | S1S130 | -8d |  |  | Electrical Crew (LV/containment/cabling) [768 h] | 426,136.7 |
| S1M000 |  | Chilled water pipework - shared spine primary distribution (1,250 m) |  | 31d | 2027-01-25 | 2027-03-08 | S1S160 SS+10d, S1S090, S1S130 | -51d |  |  | Pipefitting Crew (chilled water) [2976 h] | 831,198.84 |
| S1M090 |  | Ventilation, smoke extract and comfort cooling - substation/spine/generator |  | 25d | 2027-01-25 | 2027-02-26 | S1S160 SS+15d | -26d |  |  | Mechanical Crew (plant, ductwork) [3200 h] | 1,373,021.56 |
| S1E030 |  | Sprinkler installation and dry risers - spine, substation and ancillary |  | 20d | 2027-02-01 | 2027-02-26 | S1S160 SS+20d | -8d |  |  | Fire Detection & Suppression Crew [1920 h] | 186,947.48 |
| S1E040 |  | Addressable fire detection and alarm - shared areas |  | 15d | 2027-02-08 | 2027-02-26 | S1E010 SS+10d | -8d |  |  | Fire Detection & Suppression Crew [720 h] | 120,966.02 |
| S1M040 |  | Primary and secondary pump sets with inverters (12 nr) |  | 15d | 2027-02-08 | 2027-02-26 | S1M000 SS+10d | -36d |  |  | Mechanical Crew (plant, ductwork) [960 h] | 795,405.59 |
| S1M050 |  | Valves, strainers, commissioning sets and instrumentation - spine |  | 25d | 2027-02-15 | 2027-03-19 | S1M000 SS+15d | -51d |  |  | Pipefitting Crew (chilled water) [2400 h] | 1,174,170.16 |
| S1M070 |  | Thermal insulation and identification - spine pipework |  | 20d | 2027-03-01 | 2027-03-30 | S1M050 SS+10d | -46d |  |  | Pipe & Duct Insulation Crew [640 h] | 420,084.34 |
| S1M080 |  | Pressure test, flush and chemically clean - shared spine |  | 10d | 2027-03-22 | 2027-04-06 | S1M050, S1M040 | -51d |  |  | Pipefitting Crew (chilled water) [480 h] | 105,021.09 |

| ID | WBS | Activity | Type | Duration | Start | Finish | Predecessors | Total float | Calendar | Resources | Cost |
| --- | --- | --- | --- | --- | --- | --- | --- | --- | --- | --- | --- |
|  | PDC.6.6 | **S1 Hall 1 Fit-out** |  |  | 2027-02-23 | 2027-04-29 |  |  |  |  |  |
| S1I000 |  | Hall 1 substation 20/0.4 kV, 3.3 MVA - install and terminate |  | 10d | 2027-02-23 | 2027-03-08 | S1E000 SS+15d, S1S200 | -52d |  | Electrical Crew (LV/containment/cabling) [640 h] | 279,913.32 |
| S1I050 |  | Hall 1 containment, cabling, small power and lighting |  | 20d | 2027-02-23 | 2027-03-22 | S1S200 | -52d |  | Electrical Crew (LV/containment/cabling) [2560 h] | 467,914.81 |
| S1I060 |  | Hall 1 CRAH units (7 nr, N+1) - install and connect |  | 8d | 2027-02-23 | 2027-03-04 | PR4085, S1S200 | -45d |  | Mechanical Crew (plant, ductwork) [512 h] | 560,399.4 |
| S1I080 |  | Hall 1 internal partitions, linings and fire-rated boarding |  | 12d | 2027-02-23 | 2027-03-10 | S1S200 | 6d |  | Fit-Out Crew (partitions, finishes) [960 h] | 240,590.29 |
| S1I070 |  | Hall 1 chilled water connections and hall pipework (400 m) |  | 20d | 2027-02-26 | 2027-03-25 | S1M000 SS+20d, S1I060 SS+3d | -45d |  | Pipefitting Crew (chilled water) [960 h] | 264,472.36 |
| S1I010 |  | Hall 1 UPS modules (4 nr at 1000 kVA, N+1) |  | 10d | 2027-03-02 | 2027-03-15 | PR4115, S1I000 SS+5d | -52d |  | Electrical Crew (LV/containment/cabling) [640 h] | 777,072.8 |
| S1I030 |  | Hall 1 LV main switchboards and distribution |  | 12d | 2027-03-09 | 2027-03-24 | S1I010 SS+5d | -52d |  | Electrical Crew (LV/containment/cabling) [768 h] | 309,158 |
| S1I090 |  | Hall 1 anti-static sealed screed floor finish (1,250 m2) |  | 10d | 2027-03-11 | 2027-03-24 | S1I080 | 6d |  | Fit-Out Crew (partitions, finishes) [800 h] | 123,883.49 |
| S1I020 |  | Hall 1 lithium-ion battery system and fire-rated battery room |  | 12d | 2027-03-16 | 2027-04-02 | PR4120, S1I010 | -44d |  | Electrical Crew (LV/containment/cabling) [768 h] | 275,735.51 |
| S1I110 |  | Hall 1 aspirating smoke detection to white space |  | 10d | 2027-03-23 | 2027-04-07 | S1I050 | -44d |  | Fire Detection & Suppression Crew [480 h] | 47,794.58 |
| S1I140 |  | BMS field devices, panels and BACnet/IP integration - Section 1 |  | 20d | 2027-03-23 | 2027-04-21 | PR4155, S1I050, S1M070 SS+10d | -52d |  | BMS / DCIM Crew [640 h] | 392,331.21 |
| S1I160 |  | Access control (five layers), mantrap, ANPR and CCTV - Section 1 |  | 18d | 2027-03-23 | 2027-04-19 | S1I050, EN5090 | -38d |  | ELV / Security / Data Crew [576 h] | 365,732.49 |
| S1I170 |  | Structured cabling, meet-me room and containment - Section 1 |  | 12d | 2027-03-23 | 2027-04-09 | S1I050, EN5080 | -32d |  | ELV / Security / Data Crew [384 h] | 159,592.36 |
| S1I180 |  | Floor and wall finishes to plant rooms - Section 1 |  | 12d | 2027-03-23 | 2027-04-09 | S1I050 | -11d |  | Fit-Out Crew (partitions, finishes) [960 h] | 165,269.13 |
| S1I040 |  | Hall 1 overhead busway to rack PDUs (240 m) |  | 12d | 2027-03-25 | 2027-04-13 | PR4125, S1I030 | -51d |  | Electrical Crew (LV/containment/cabling) [768 h] | 155,414.56 |
| S1I130 |  | Hall 1 energy metering per hall and per feed |  | 6d | 2027-03-25 | 2027-04-05 | S1I030 | -52d |  | Electrical Crew (LV/containment/cabling) [384 h] | 109,667.53 |
| S1I120 |  | Hall 1 gaseous / water-mist suppression system |  | 15d | 2027-04-01 | 2027-04-21 | PR4160, S1I110 SS+5d | -44d |  | Fire Detection & Suppression Crew [720 h] | 320,015.92 |
| S1I200 |  | Gatehouse fit-out, weighbridge and security console |  | 10d | 2027-04-01 | 2027-04-14 | S1S160, S1I160 SS+5d | 6d |  | Fit-Out Crew (partitions, finishes) [800 h] | 335,278.13 |
| S1I150 |  | DCIM installation and per-hall reporting integration - Section 1 |  | 12d | 2027-04-06 | 2027-04-21 | S1I140 SS+8d, S1I130 | -52d |  | BMS / DCIM Crew [384 h] | 212,789.81 |
| S1I190 |  | Signage, wayfinding and hall labelling - Section 1 |  | 5d | 2027-04-12 | 2027-04-16 | S1I180 | -11d |  | Fit-Out Crew (partitions, finishes) [400 h] | 112,776.7 |
| S1I100 |  | Hall 1 cold-aisle containment framework and blanking (1,250 m2) |  | 12d | 2027-04-14 | 2027-04-29 | S1I090, S1I040 | -6d |  | Fit-Out Crew (partitions, finishes) [960 h] | 205,048.54 |
|  | PDC.6.7 | **S1 Commissioning & Handover** |  |  | 2027-03-09 | 2027-07-14 |  |  |  |  |  |
| S1C000 |  | L2 site delivery and static inspection - Section 1 plant |  | 15d | 2027-03-09 | 2027-03-31 | S1G000, S1M010, S1I010 SS+5d, PR4010, PR4130, PR4135, PR4140, PR4095 | -47d | Commissioning & handover 5d (Fin hols, works through wk28-30) | Commissioning Team (Mech + Elec + DC specialist) [720 h] | 34,103.61 |
| S1C030 |  | L3 generator start-up and individual load test (09:00-16:00, Cond 15) |  | 20d | 2027-04-01 | 2027-04-28 | S1G040, S1G020, S1C000, S1G010, S1G030 | -37d | Commissioning & handover 5d (Fin hols, works through wk28-30) | Commissioning Team (Mech + Elec + DC specialist) [960 h] | 27,282.89 |
| S1C010 |  | L3 component start-up and functional test - mechanical (Section 1) |  | 25d | 2027-04-07 | 2027-05-12 | S1C000, S1M080, S1I070, S1M060, S1M020, S1M090, MS1S230 | -51d | Commissioning & handover 5d (Fin hols, works through wk28-30) | Commissioning Team (Mech + Elec + DC specialist) [1200 h] | 40,924.33 |
| S1C020 |  | L3 component start-up and functional test - electrical (Section 1) |  | 25d | 2027-04-14 | 2027-05-19 | S1C000, S1I040, S1I020, S1G050, S1H050, S1E020 | -51d | Commissioning & handover 5d (Fin hols, works through wk28-30) | Commissioning Team (Mech + Elec + DC specialist) [1200 h] | 40,924.33 |
| S1C060 |  | L3 security, access control and CCTV functional testing |  | 8d | 2027-04-20 | 2027-04-29 | S1I160, S1I170 | -38d | Commissioning & handover 5d (Fin hols, works through wk28-30) | Commissioning Team (Mech + Elec + DC specialist) [384 h] | 10,231.08 |
| S1C040 |  | L3 BMS/DCIM point-to-point, sequence and cause-and-effect proving |  | 20d | 2027-04-22 | 2027-05-20 | S1I150, S1C010 SS+10d | -52d | Commissioning & handover 5d (Fin hols, works through wk28-30) | Commissioning Team (Mech + Elec + DC specialist) [960 h] | 20,462.17 |
| S1C050 |  | L3 fire detection, suppression and life-safety functional testing |  | 12d | 2027-04-22 | 2027-05-10 | S1I120, S1E040, S1E030 | -44d | Commissioning & handover 5d (Fin hols, works through wk28-30) | Commissioning Team (Mech + Elec + DC specialist) [576 h] | 13,641.44 |
| MS1C130 |  | M: Tenant fit-out access to Hall 1 (Month 12, MS-10) | milestone | 0d | 2027-04-30 | 2027-04-30 | S1I100 | -6d |  |  |  |
| S1C070 |  | L4a Integrated systems testing - non-utility-dependent (generator-borne) |  | 15d | 2027-05-21 | 2027-06-10 | S1C010, S1C020, S1C030, S1C040, S1C050, S1C060 | -52d | Commissioning & handover 5d (Fin hols, works through wk28-30) | Commissioning Team (Mech + Elec + DC specialist) [720 h] | 120,044.71 |
| S1C100 |  | Section 1 as-built drawings, O&M manuals, training and statutory certificates |  | 15d | 2027-05-28 | 2027-06-17 | S1C070 SS+5d, S1I190 | -39d | Commissioning & handover 5d (Fin hols, works through wk28-30) | Commissioning Team (Mech + Elec + DC specialist) [720 h] | 59,681.32 |
| S1C080 |  | L4b Integrated systems testing - loss of utility, black building, failure modes |  | 10d | 2027-06-11 | 2027-06-24 | S1C070, S1H090 | -52d | Commissioning & handover 5d (Fin hols, works through wk28-30) | Commissioning Team (Mech + Elec + DC specialist) [480 h] | 87,305.24 |
| S1C090 |  | L5 24 h integrated load-bank test at full 10 MW shared capacity |  | 8d | 2027-06-28 | 2027-07-07 | S1C080, MS3105 | -52d | Commissioning & handover 5d (Fin hols, works through wk28-30) | Commissioning Team (Mech + Elec + DC specialist) [384 h] | 288,419.11 |
| S1C110 |  | Sectional occupancy inspection - Section 1 (kayttoonottotarkastus, Cond 6) |  | 5d | 2027-07-08 | 2027-07-14 | S1C090, S1C100, ST3130, S1I200 | -52d | Design / Procurement / Authority 5d (Fin hols) | Project & Site Management (incl. statutory supervisors) [360 h] | 27,152.97 |
| S1C120 |  | Tenant technical acceptance and sign-off - Hall 1 (PDC-TA-001 Section 4) |  | 5d | 2027-07-08 | 2027-07-14 | S1C090, MS1C130 | -52d | Commissioning & handover 5d (Fin hols, works through wk28-30) | Commissioning Team (Mech + Elec + DC specialist) [240 h] |  |

| ID | WBS | Activity | Type | Duration | Start | Finish | Predecessors | Total float | Resources | Cost |
| --- | --- | --- | --- | --- | --- | --- | --- | --- | --- | --- |
|  | PDC.7 | **Section 2 - Hall 2** |  |  | 2026-08-17 | 2027-10-07 |  |  |  |  |
|  | PDC.7.1 | **S2 Substructure & Structure** |  |  | 2026-08-17 | 2027-02-05 |  |  |  |  |
| S2F010 |  | Bulk excavation - Hall 2 (2,592 m3) |  | 6d | 2026-08-17 | 2026-08-24 | EN5020, DE2085, S1F040 SS+15d | 0d | Earthworks Crew (excavator gangs) [768 h] | 72,632.78 |
| S2F020 |  | Pad foundations - Hall 2 |  | 12d | 2026-08-25 | 2026-09-09 | S2F010, S1F110 | 0d | Concrete Crew (form/rebar/pour) [1920 h] | 69,505.47 |
| S2F030 |  | Ground beams and pile caps - Hall 2 |  | 6d | 2026-09-10 | 2026-09-17 | S2F020 | 0d | Concrete Crew (form/rebar/pour) [960 h] | 91,453.62 |
| S2F040 |  | Underground services and drainage - Hall 2 |  | 8d | 2026-09-15 | 2026-09-24 | S2F030 SS+3d | 0d | Civil Crew (trenching, drainage, roads) [384 h] |  |
| S2F050 |  | Sub-base, capping and geotextile - Hall 2 |  | 5d | 2026-09-21 | 2026-09-25 | S2F030, S2F040 SS+4d | 0d | Civil Crew (trenching, drainage, roads) [480 h] | 88,991.52 |
| S2F060 |  | Ground slab - Hall 2, FM2 flatness (432 m3) |  | 10d | 2026-09-28 | 2026-10-09 | S2F050 | 0d | Concrete Crew (form/rebar/pour) [1600 h] | 308,852.92 |
| S2S010 |  | Steel erection - Hall 2 frame (112 t) |  | 13d | 2026-12-30 | 2027-01-19 | S2F060, PR4036, S1S020 | -55d | Structural Steel Erection Crew [1040 h] | 812,351.68 |
| S2S020 |  | Precast wall panels - Hall 2 (64 nr, EI 120) |  | 13d | 2027-01-20 | 2027-02-05 | S2S010, PR4041, S1S060 | -55d | Precast Erection Crew [624 h] | 442,609.4 |
| S2S030 |  | Metal deck, purlins and side rails - Hall 2 |  | 4d | 2027-01-20 | 2027-01-25 | S2S010 | -46d | Structural Steel Erection Crew [320 h] | 124,885.69 |
|  | PDC.7.2 | **S2 Envelope** |  |  | 2027-02-08 | 2027-04-15 |  |  |  |  |
| S2E010 |  | Warm roof build-up - Hall 2 (1,728 m2) |  | 12d | 2027-02-08 | 2027-02-23 | S2S030, S2S020, S1S120 | -55d | Roofing & Waterproofing Crew [384 h] | 183,923.12 |
| S2E020 |  | Insulated composite cladding - Hall 2 (1,651 m2) |  | 21d | 2027-02-15 | 2027-03-15 | S2S020, S2E010 SS+5d, S1S150 | -55d | Envelope / Cladding Crew [1008 h] | 306,673.84 |
| S2E030 |  | Acoustic louvres - Hall 2 (310 m2) |  | 8d | 2027-03-16 | 2027-03-25 | S2E020, PR4055 | -49d | Envelope / Cladding Crew [384 h] | 143,939.09 |
| S2E040 |  | Doors, rainwater goods and roof access - Hall 2 |  | 8d | 2027-03-16 | 2027-03-25 | S2E020, S2E010 | -49d | Envelope / Cladding Crew [384 h] | 126,089.32 |
| S2E050 |  | Passive fire protection to steel - Hall 2 (2,000 m2) |  | 20d | 2027-03-16 | 2027-04-14 | S2E020 | -55d | Passive Fire Protection Crew [960 h] | 79,393.06 |
| S2E060 |  | Airtightness works and q50 test - Hall 2 |  | 6d | 2027-03-30 | 2027-04-06 | S2E030, S2E040 | -49d | Envelope / Cladding Crew [288 h] | 58,039.96 |
| MSS2E070 |  | M: Hall 2 weathertight | milestone | 0d | 2027-04-15 | 2027-04-15 | S2E060, S2E050 | -55d |  |  |
|  | PDC.7.3 | **S2 Hall 2 MEP & Fit-out** |  |  | 2027-04-15 | 2027-08-04 |  |  |  |  |
| S2I040 |  | Hall 2 containment, cabling, small power and lighting |  | 20d | 2027-04-15 | 2027-05-13 | S2E050 | -29d | Electrical Crew (LV/containment/cabling) [2560 h] | 467,914.81 |
| S2I050 |  | Hall 2 CRAH units (7 nr) and dry coolers (2 nr) |  | 12d | 2027-04-15 | 2027-04-30 | S2E050, PR4085, PR4080 | -44d | Mechanical Crew (plant, ductwork) [768 h] | 1,319,908.43 |
| S2I070 |  | Hall 2 internal partitions, linings and fire-rated boarding |  | 12d | 2027-04-15 | 2027-04-30 | S2E050, PR4060 | -28d | Fit-Out Crew (partitions, finishes) [960 h] | 240,590.29 |
| S2I010 |  | Hall 2 substation 20/0.4 kV, 3.3 MVA |  | 10d | 2027-04-16 | 2027-04-29 | MSS2E070, S1E000 | -55d | Electrical Crew (LV/containment/cabling) [640 h] | 279,913.32 |
| S2M010 |  | Extend shared spine services to Hall 2 (live-environment method statement) |  | 12d | 2027-04-16 | 2027-05-03 | MSS2E070, S1M080 | -54d | Pipefitting Crew (chilled water) [576 h] |  |
| S2I020 |  | Hall 2 UPS modules (4 nr) and battery system |  | 18d | 2027-04-30 | 2027-05-26 | S2I010, PR4115, PR4120 | -55d | Electrical Crew (LV/containment/cabling) [1152 h] | 1,052,808.31 |
| S2I080 |  | Hall 2 anti-static sealed screed floor finish (1,250 m2) |  | 10d | 2027-05-03 | 2027-05-17 | S2I070 | -28d | Fit-Out Crew (partitions, finishes) [800 h] | 123,883.49 |
| S2I060 |  | Hall 2 chilled water connections and hall pipework (400 m) |  | 20d | 2027-05-04 | 2027-06-01 | S2M010, S2I050 SS+3d | -54d | Pipefitting Crew (chilled water) [960 h] | 584,700.58 |
| S2I100 |  | Hall 2 aspirating smoke detection and suppression |  | 18d | 2027-05-14 | 2027-06-08 | S2I040, PR4160 | -29d | Fire Detection & Suppression Crew [864 h] | 389,804.33 |
| S2I120 |  | Hall 2 access control, CCTV and structured cabling |  | 14d | 2027-05-14 | 2027-06-02 | S2I040, S1I160 | -25d | ELV / Security / Data Crew [448 h] | 262,662.42 |
| S2I130 |  | Hall 2 plant room finishes, signage and labelling |  | 10d | 2027-05-14 | 2027-05-27 | S2I040 | 19d | Fit-Out Crew (partitions, finishes) [800 h] | 139,022.91 |
| S2I030 |  | Hall 2 LV switchboards, distribution and busway (240 m) |  | 20d | 2027-05-27 | 2027-06-23 | S2I020, PR4125 | -55d | Electrical Crew (LV/containment/cabling) [1280 h] | 464,572.56 |
| S2I065 |  | Hall 2 pipework insulation, pressure test and flush |  | 12d | 2027-06-02 | 2027-06-17 | S2I060 | -54d | Pipe & Duct Insulation Crew [384 h] | 175,385.21 |
| S2I110 |  | Hall 2 BMS/DCIM extension, metering and integration |  | 18d | 2027-06-18 | 2027-08-04 | S2I040, S2I065, S1I150 | -54d | BMS / DCIM Crew [576 h] | 412,228.04 |
| S2I090 |  | Hall 2 cold-aisle containment framework and blanking |  | 12d | 2027-06-24 | 2027-08-02 | S2I080, S2I030 | -55d | Fit-Out Crew (partitions, finishes) [960 h] | 205,048.54 |

| ID | WBS | Activity | Type | Duration | Start | Finish | Predecessors | Total float | Constraint | Calendar | Resources | Cost |
| --- | --- | --- | --- | --- | --- | --- | --- | --- | --- | --- | --- | --- |
|  | PDC.7.4 | **S2 Commissioning & Handover** |  |  | 2027-05-27 | 2027-10-07 |  |  |  |  |  |  |
| S2C000 |  | L2 site delivery and static inspection - Section 2 |  | 10d | 2027-05-27 | 2027-06-09 | S2I020, S2I050 | -33d |  | Commissioning & handover 5d (Fin hols, works through wk28-30) | Commissioning Team (Mech + Elec + DC specialist) [480 h] | 13,641.44 |
| S2C010 |  | L3 component start-up - mechanical (Section 2) |  | 18d | 2027-06-18 | 2027-07-14 | S2C000, S2I065 | -39d |  | Commissioning & handover 5d (Fin hols, works through wk28-30) | Commissioning Team (Mech + Elec + DC specialist) [864 h] | 17,051.81 |
| S2C020 |  | L3 component start-up - electrical (Section 2) |  | 18d | 2027-08-03 | 2027-08-26 | S2C000, S2I030, S2I090 | -70d |  | Commissioning & handover 5d (Fin hols, works through wk28-30) | Commissioning Team (Mech + Elec + DC specialist) [864 h] | 17,051.81 |
| S2C030 |  | L3 BMS/DCIM, fire and security functional testing (Section 2) |  | 15d | 2027-08-05 | 2027-08-25 | S2I110, S2I100, S2I120 | -69d |  | Commissioning & handover 5d (Fin hols, works through wk28-30) | Commissioning Team (Mech + Elec + DC specialist) [720 h] | 10,231.08 |
| MSS2C045 |  | M: DNO Stage 2 capacity release (30 Jun 2027, GC 3.3) | milestone | 0d | 2027-08-27 | 2027-08-27 | DE2125, S2C020 | -59d | start on 2027-06-30 | Commissioning & handover 5d (Fin hols, works through wk28-30) |  |  |
| S2C040 |  | L4a Integrated systems testing - non-utility-dependent (Section 2) |  | 12d | 2027-08-27 | 2027-09-13 | S2C010, S2C020, S2C030, S1C080 | -70d |  | Commissioning & handover 5d (Fin hols, works through wk28-30) | Commissioning Team (Mech + Elec + DC specialist) [576 h] | 54,565.78 |
| S2C070 |  | Section 2 as-built drawings, O&M manuals, training and certificates |  | 12d | 2027-09-03 | 2027-09-20 | S2C040 SS+5d | -62d |  | Commissioning & handover 5d (Fin hols, works through wk28-30) | Commissioning Team (Mech + Elec + DC specialist) [576 h] | 35,808.79 |
| S2C050 |  | L4b Integrated systems testing - loss of utility and failure modes (Section 2) |  | 8d | 2027-09-14 | 2027-09-23 | S2C040, MSS2C045 | -70d |  | Commissioning & handover 5d (Fin hols, works through wk28-30) | Commissioning Team (Mech + Elec + DC specialist) [384 h] | 38,196.04 |
| S2C060 |  | L5 24 h integrated load-bank test at full Section 2 load (2.5 MW) |  | 5d | 2027-09-24 | 2027-09-30 | S2C050, MS3105 | -70d |  | Commissioning & handover 5d (Fin hols, works through wk28-30) | Commissioning Team (Mech + Elec + DC specialist) [240 h] | 131,217.7 |
| S2C080 |  | Sectional occupancy inspection - Section 2 (kayttoonottotarkastus) |  | 5d | 2027-10-01 | 2027-10-07 | S2C060, S2C070, S2I130 | -70d |  | Design / Procurement / Authority 5d (Fin hols) | Project & Site Management (incl. statutory supervisors) [360 h] | 22,216.07 |
| S2C090 |  | Tenant technical acceptance and sign-off - Hall 2 |  | 5d | 2027-10-01 | 2027-10-07 | S2C060 | -70d |  | Commissioning & handover 5d (Fin hols, works through wk28-30) | Commissioning Team (Mech + Elec + DC specialist) [240 h] |  |
|  | PDC.8 | **Section 3 - Hall 3** |  |  | 2026-09-07 | 2027-11-26 |  |  |  |  |  |  |
|  | PDC.8.1 | **S3 Substructure & Structure** |  |  | 2026-09-07 | 2027-03-31 |  |  |  |  |  |  |
| S3F010 |  | Bulk excavation - Hall 3 (2,592 m3) |  | 6d | 2026-09-07 | 2026-09-14 | EN5020, DE2085, S2F010 SS+15d, EN5060 | 32d |  |  | Earthworks Crew (excavator gangs) [768 h] | 72,632.78 |
| S3F020 |  | Pad foundations - Hall 3 |  | 12d | 2026-09-15 | 2026-09-30 | S3F010, S2F020 | 37d |  |  | Concrete Crew (form/rebar/pour) [1920 h] | 69,505.47 |
| S3F030 |  | Ground beams and pile caps - Hall 3 |  | 6d | 2026-10-01 | 2026-10-08 | S3F020 | 37d |  |  | Concrete Crew (form/rebar/pour) [960 h] | 91,453.62 |
| S3F040 |  | Underground services and drainage - Hall 3 |  | 8d | 2026-10-06 | 2026-10-15 | S3F030 SS+3d | 37d |  |  | Civil Crew (trenching, drainage, roads) [384 h] |  |
| S3F050 |  | Sub-base, capping and geotextile - Hall 3 |  | 5d | 2026-10-12 | 2026-10-16 | S3F030, S3F040 SS+4d | 37d |  |  | Civil Crew (trenching, drainage, roads) [480 h] | 88,991.52 |
| S3F060 |  | Ground slab - Hall 3, FM2 flatness (432 m3) |  | 10d | 2026-10-19 | 2026-10-30 | S3F050 | 37d |  |  | Concrete Crew (form/rebar/pour) [1600 h] | 308,852.92 |
| S3S010 |  | Steel erection - Hall 3 frame (112 t) |  | 13d | 2027-02-22 | 2027-03-10 | S3F060, PR4037, S2S010 | -39d |  |  | Structural Steel Erection Crew [1040 h] | 812,351.68 |
| S3S020 |  | Precast wall panels - Hall 3 (64 nr, EI 120) |  | 13d | 2027-03-11 | 2027-03-31 | S3S010, PR4042, S2S020 | -39d |  |  | Precast Erection Crew [624 h] | 442,609.4 |
| S3S030 |  | Metal deck, purlins and side rails - Hall 3 |  | 4d | 2027-03-11 | 2027-03-16 | S3S010 | -30d |  |  | Structural Steel Erection Crew [320 h] | 124,885.69 |
|  | PDC.8.2 | **S3 Envelope** |  |  | 2027-04-01 | 2027-06-07 |  |  |  |  |  |  |
| S3E010 |  | Warm roof build-up - Hall 3 (1,728 m2) |  | 12d | 2027-04-01 | 2027-04-16 | S3S030, S3S020, S2E010 | -39d |  |  | Roofing & Waterproofing Crew [384 h] | 183,923.12 |
| S3E020 |  | Insulated composite cladding - Hall 3 (1,651 m2) |  | 21d | 2027-04-08 | 2027-05-07 | S3S020, S3E010 SS+5d, S2E020 | -39d |  |  | Envelope / Cladding Crew [1008 h] | 306,673.84 |
| S3E030 |  | Acoustic louvres - Hall 3 (310 m2) |  | 8d | 2027-05-10 | 2027-05-19 | S3E020, PR4055 | -33d |  |  | Envelope / Cladding Crew [384 h] | 143,939.09 |
| S3E040 |  | Doors, rainwater goods and roof access - Hall 3 |  | 8d | 2027-05-10 | 2027-05-19 | S3E020, S3E010 | -33d |  |  | Envelope / Cladding Crew [384 h] | 126,089.32 |
| S3E050 |  | Passive fire protection to steel - Hall 3 (2,000 m2) |  | 20d | 2027-05-10 | 2027-06-04 | S3E020 | -39d |  |  | Passive Fire Protection Crew [960 h] | 79,393.06 |
| S3E060 |  | Airtightness works and q50 test - Hall 3 |  | 6d | 2027-05-20 | 2027-05-27 | S3E030, S3E040 | -33d |  |  | Envelope / Cladding Crew [288 h] | 58,039.96 |
| MSS3E070 |  | M: Hall 3 weathertight | milestone | 0d | 2027-06-07 | 2027-06-07 | S3E060, S3E050 | -39d |  |  |  |  |

| ID | WBS | Activity | Type | Duration | Start | Finish | Predecessors | Total float | Constraint | Calendar | Resources | Cost |
| --- | --- | --- | --- | --- | --- | --- | --- | --- | --- | --- | --- | --- |
|  | PDC.8.3 | **S3 Hall 3 MEP & Fit-out** |  |  | 2027-06-07 | 2027-09-23 |  |  |  |  |  |  |
| S3I040 |  | Hall 3 containment, cabling, small power and lighting |  | 20d | 2027-06-07 | 2027-07-05 | S3E050 | -14d |  |  | Electrical Crew (LV/containment/cabling) [2560 h] | 467,914.81 |
| S3I050 |  | Hall 3 CRAH units (7 nr) and dry coolers (2 nr) |  | 12d | 2027-06-07 | 2027-06-22 | S3E050, PR4085, PR4080 | -29d |  |  | Mechanical Crew (plant, ductwork) [768 h] | 1,319,908.43 |
| S3I070 |  | Hall 3 internal partitions, linings and fire-rated boarding |  | 12d | 2027-06-07 | 2027-06-22 | S3E050, PR4060 | -10d |  |  | Fit-Out Crew (partitions, finishes) [960 h] | 240,590.29 |
| S3I010 |  | Hall 3 substation 20/0.4 kV, 3.3 MVA |  | 10d | 2027-06-08 | 2027-06-21 | MSS3E070, S1E000 | -37d |  |  | Electrical Crew (LV/containment/cabling) [640 h] | 279,913.32 |
| S3M010 |  | Extend shared spine services to Hall 3 (live-environment method statement) |  | 12d | 2027-06-08 | 2027-06-23 | MSS3E070, S1M080 | -39d |  |  | Pipefitting Crew (chilled water) [576 h] |  |
| S3I020 |  | Hall 3 UPS modules (4 nr) and battery system |  | 18d | 2027-06-22 | 2027-08-06 | S3I010, PR4115, PR4120 | -37d |  |  | Electrical Crew (LV/containment/cabling) [1152 h] | 1,052,808.31 |
| S3I080 |  | Hall 3 anti-static sealed screed floor finish (1,250 m2) |  | 10d | 2027-06-23 | 2027-07-07 | S3I070 | -10d |  |  | Fit-Out Crew (partitions, finishes) [800 h] | 123,883.49 |
| S3I060 |  | Hall 3 chilled water connections and hall pipework (400 m) |  | 20d | 2027-06-24 | 2027-08-12 | S3M010, S3I050 SS+3d | -39d |  |  | Pipefitting Crew (chilled water) [960 h] | 584,700.58 |
| S3I100 |  | Hall 3 aspirating smoke detection and suppression |  | 18d | 2027-07-06 | 2027-08-19 | S3I040, PR4160 | -14d |  |  | Fire Detection & Suppression Crew [864 h] | 389,804.33 |
| S3I120 |  | Hall 3 access control, CCTV and structured cabling |  | 14d | 2027-07-06 | 2027-08-13 | S3I040, S1I160 | -10d |  |  | ELV / Security / Data Crew [448 h] | 262,662.42 |
| S3I130 |  | Hall 3 plant room finishes, signage and labelling |  | 10d | 2027-07-06 | 2027-08-09 | S3I040 | 33d |  |  | Fit-Out Crew (partitions, finishes) [800 h] | 139,022.91 |
| S3I030 |  | Hall 3 LV switchboards, distribution and busway (240 m) |  | 20d | 2027-08-09 | 2027-09-03 | S3I020, PR4125 | -37d |  |  | Electrical Crew (LV/containment/cabling) [1280 h] | 464,572.56 |
| S3I065 |  | Hall 3 pipework insulation, pressure test and flush |  | 12d | 2027-08-13 | 2027-08-30 | S3I060 | -39d |  |  | Pipe & Duct Insulation Crew [384 h] | 175,385.21 |
| S3I110 |  | Hall 3 BMS/DCIM extension, metering and integration |  | 18d | 2027-08-31 | 2027-09-23 | S3I040, S3I065, S1I150 | -39d |  |  | BMS / DCIM Crew [576 h] | 412,228.04 |
| S3I090 |  | Hall 3 cold-aisle containment framework and blanking |  | 12d | 2027-09-06 | 2027-09-21 | S3I080, S3I030 | -37d |  |  | Fit-Out Crew (partitions, finishes) [960 h] | 205,048.54 |
|  | PDC.8.4 | **S3 Commissioning & Handover** |  |  | 2027-08-09 | 2027-11-26 |  |  |  |  |  |  |
| S3C000 |  | L2 site delivery and static inspection - Section 3 |  | 10d | 2027-08-09 | 2027-08-20 | S3I020, S3I050 | -19d |  | Commissioning & handover 5d (Fin hols, works through wk28-30) | Commissioning Team (Mech + Elec + DC specialist) [480 h] | 13,641.44 |
| S3C010 |  | L3 component start-up - mechanical (Section 3) |  | 18d | 2027-08-31 | 2027-09-23 | S3C000, S3I065 | -25d |  | Commissioning & handover 5d (Fin hols, works through wk28-30) | Commissioning Team (Mech + Elec + DC specialist) [864 h] | 17,051.81 |
| S3C020 |  | L3 component start-up - electrical (Section 3) |  | 18d | 2027-09-22 | 2027-10-15 | S3C000, S3I030, S3I090 | -41d |  | Commissioning & handover 5d (Fin hols, works through wk28-30) | Commissioning Team (Mech + Elec + DC specialist) [864 h] | 17,051.81 |
| S3C030 |  | L3 BMS/DCIM, fire and security functional testing (Section 3) |  | 15d | 2027-09-24 | 2027-10-14 | S3I110, S3I100, S3I120 | -40d |  | Commissioning & handover 5d (Fin hols, works through wk28-30) | Commissioning Team (Mech + Elec + DC specialist) [720 h] | 10,231.08 |
| S3C040 |  | L4a Integrated systems testing - non-utility-dependent (Section 3) |  | 12d | 2027-10-18 | 2027-11-02 | S3C010, S3C020, S3C030, S1C080 | -41d |  | Commissioning & handover 5d (Fin hols, works through wk28-30) | Commissioning Team (Mech + Elec + DC specialist) [576 h] | 54,565.78 |
| S3C070 |  | Section 3 as-built drawings, O&M manuals, training and certificates |  | 12d | 2027-10-25 | 2027-11-09 | S3C040 SS+5d | -33d |  | Commissioning & handover 5d (Fin hols, works through wk28-30) | Commissioning Team (Mech + Elec + DC specialist) [576 h] | 35,808.79 |
| MSS3C045 |  | M: DNO Stage 3 capacity release (31 Oct 2027, GC 3.3) | milestone | 0d | 2027-11-01 | 2027-11-01 | DE2135, S3C020 | -40d | start on 2027-10-31 | Commissioning & handover 5d (Fin hols, works through wk28-30) |  |  |
| S3C050 |  | L4b Integrated systems testing - loss of utility and failure modes (Section 3) |  | 8d | 2027-11-03 | 2027-11-12 | S3C040, MSS3C045 | -41d |  | Commissioning & handover 5d (Fin hols, works through wk28-30) | Commissioning Team (Mech + Elec + DC specialist) [384 h] | 38,196.04 |
| S3C060 |  | L5 24 h integrated load-bank test at full Section 3 load (2.5 MW) |  | 5d | 2027-11-15 | 2027-11-19 | S3C050, MS3105 | -41d |  | Commissioning & handover 5d (Fin hols, works through wk28-30) | Commissioning Team (Mech + Elec + DC specialist) [240 h] | 131,217.7 |
| S3C080 |  | Sectional occupancy inspection - Section 3 (kayttoonottotarkastus) |  | 5d | 2027-11-22 | 2027-11-26 | S3C060, S3C070, S3I130 | -41d |  | Design / Procurement / Authority 5d (Fin hols) | Project & Site Management (incl. statutory supervisors) [360 h] | 22,216.07 |
| S3C090 |  | Tenant technical acceptance and sign-off - Hall 3 |  | 5d | 2027-11-22 | 2027-11-26 | S3C060 | -41d |  | Commissioning & handover 5d (Fin hols, works through wk28-30) | Commissioning Team (Mech + Elec + DC specialist) [240 h] |  |

| ID | WBS | Activity | Type | Duration | Start | Finish | Predecessors | Total float | Resources | Cost |
| --- | --- | --- | --- | --- | --- | --- | --- | --- | --- | --- |
|  | PDC.9 | **Section 4 - Hall 4, Admin/NOC & External Works** |  |  | 2026-09-28 | 2028-03-23 |  |  |  |  |
|  | PDC.9.1 | **S4 Substructure & Structure** |  |  | 2026-09-28 | 2027-06-14 |  |  |  |  |
| S4F005 |  | Bulk excavation - Hall 4 till above rock (1,400 m3) |  | 3d | 2026-09-28 | 2026-09-30 | EN5020, DE2085, S3F010 SS+15d | 32d | Earthworks Crew (excavator gangs) [384 h] | 39,275.51 |
| S4F007 |  | Controlled blasting - Hall 4 (2,073 m3 rock, 2 blasts/week) |  | 26d | 2026-10-01 | 2026-11-05 | S4F005, MS3075, S1F020 | 32d | Drill & Blast Crew (licensed) [1248 h] | 300,535.07 |
| S4F008 |  | Muck away and trim blasted rock - Hall 4 |  | 14d | 2026-10-13 | 2026-10-30 | S4F007 SS+8d | 32d | Earthworks Crew (excavator gangs) [896 h] |  |
| S4F009 |  | Direct-to-rock / rock-socketed piers - Hall 4 |  | 8d | 2026-11-02 | 2026-11-11 | S4F008, S1F100 | 32d | Piling / Rock-Socket Crew [768 h] | 203,517.22 |
| S4F010 |  | Trim and prepare formation - Hall 4 |  | 4d | 2026-11-12 | 2026-11-17 | S4F009 | 32d | Earthworks Crew (excavator gangs) [256 h] |  |
| S4F020 |  | Pad foundations - Hall 4 |  | 12d | 2026-11-18 | 2026-12-03 | S4F010, S3F020 | 32d | Concrete Crew (form/rebar/pour) [1920 h] | 74,852.05 |
| S4F030 |  | Ground beams and pile caps - Hall 4 |  | 6d | 2026-12-04 | 2026-12-11 | S4F020 | 32d | Concrete Crew (form/rebar/pour) [960 h] | 100,914.34 |
| S4F040 |  | Underground services and drainage - Hall 4 |  | 8d | 2026-12-09 | 2026-12-18 | S4F030 SS+3d | 32d | Civil Crew (trenching, drainage, roads) [384 h] |  |
| S4F050 |  | Sub-base, capping and geotextile - Hall 4 |  | 5d | 2026-12-15 | 2026-12-21 | S4F030, S4F040 SS+4d | 32d | Civil Crew (trenching, drainage, roads) [480 h] | 120,632.95 |
| S4F060 |  | Ground slab - Hall 4, FM2 flatness (432 m3) |  | 10d | 2026-12-22 | 2027-01-08 | S4F050 | 32d | Concrete Crew (form/rebar/pour) [1600 h] | 308,852.92 |
| S4S010 |  | Steel erection - Hall 4 frame (112 t) |  | 13d | 2027-05-10 | 2027-05-26 | S4F060, PR4038, S3S010 | -50d | Structural Steel Erection Crew [1040 h] | 859,766.61 |
| S4S020 |  | Precast wall panels - Hall 4 (64 nr, EI 120) |  | 13d | 2027-05-27 | 2027-06-14 | S4S010, PR4043, S3S020 | -50d | Precast Erection Crew [624 h] | 442,609.4 |
| S4S030 |  | Metal deck, purlins and side rails - Hall 4 |  | 4d | 2027-05-27 | 2027-06-01 | S4S010 | -41d | Structural Steel Erection Crew [320 h] | 124,885.69 |
|  | PDC.9.2 | **S4 Envelope** |  |  | 2027-06-15 | 2027-09-09 |  |  |  |  |
| S4E010 |  | Warm roof build-up - Hall 4 (1,728 m2) |  | 12d | 2027-06-15 | 2027-07-01 | S4S030, S4S020, S3E010 | -50d | Roofing & Waterproofing Crew [384 h] | 183,923.12 |
| S4E020 |  | Insulated composite cladding - Hall 4 (1,651 m2) |  | 21d | 2027-06-22 | 2027-08-11 | S4S020, S4E010 SS+5d, S3E020 | -50d | Envelope / Cladding Crew [1008 h] | 306,673.84 |
| S4E030 |  | Acoustic louvres - Hall 4 (310 m2) |  | 8d | 2027-08-12 | 2027-08-23 | S4E020, PR4055 | -44d | Envelope / Cladding Crew [384 h] | 143,939.09 |
| S4E040 |  | Doors, rainwater goods and roof access - Hall 4 |  | 8d | 2027-08-12 | 2027-08-23 | S4E020, S4E010 | -44d | Envelope / Cladding Crew [384 h] | 126,089.32 |
| S4E050 |  | Passive fire protection to steel - Hall 4 (2,000 m2) |  | 20d | 2027-08-12 | 2027-09-08 | S4E020 | -50d | Passive Fire Protection Crew [960 h] | 79,393.06 |
| S4E060 |  | Airtightness works and q50 test - Hall 4 |  | 6d | 2027-08-24 | 2027-08-31 | S4E030, S4E040 | -44d | Envelope / Cladding Crew [288 h] | 58,039.96 |
| MSS4E070 |  | M: Hall 4 weathertight | milestone | 0d | 2027-09-09 | 2027-09-09 | S4E060, S4E050 | -50d |  |  |
|  | PDC.9.3 | **S4 Hall 4 MEP & Fit-out** |  |  | 2027-09-09 | 2027-12-07 |  |  |  |  |
| S4I040 |  | Hall 4 containment, cabling, small power and lighting |  | 20d | 2027-09-09 | 2027-10-06 | S4E050 | -24d | Electrical Crew (LV/containment/cabling) [2560 h] | 467,914.81 |
| S4I050 |  | Hall 4 CRAH units (7 nr) and dry coolers (2 nr) |  | 12d | 2027-09-09 | 2027-09-24 | S4E050, PR4085, PR4080 | -39d | Mechanical Crew (plant, ductwork) [768 h] | 1,317,412.03 |
| S4I070 |  | Hall 4 internal partitions, linings and fire-rated boarding |  | 12d | 2027-09-09 | 2027-09-24 | S4E050, PR4060 | -23d | Fit-Out Crew (partitions, finishes) [960 h] | 240,590.29 |
| S4I010 |  | Hall 4 substation 20/0.4 kV, 3.3 MVA |  | 10d | 2027-09-10 | 2027-09-23 | MSS4E070, S1E000 | -50d | Electrical Crew (LV/containment/cabling) [640 h] | 279,913.32 |
| S4M010 |  | Extend shared spine services to Hall 4 (live-environment method statement) |  | 12d | 2027-09-10 | 2027-09-27 | MSS4E070, S1M080 | -49d | Pipefitting Crew (chilled water) [576 h] |  |
| S4I020 |  | Hall 4 UPS modules (4 nr) and battery system |  | 18d | 2027-09-24 | 2027-10-19 | S4I010, PR4115, PR4120 | -50d | Electrical Crew (LV/containment/cabling) [1152 h] | 1,052,808.31 |
| S4I080 |  | Hall 4 anti-static sealed screed floor finish (1,250 m2) |  | 10d | 2027-09-27 | 2027-10-08 | S4I070 | -23d | Fit-Out Crew (partitions, finishes) [800 h] | 123,883.49 |
| S4I060 |  | Hall 4 chilled water connections and hall pipework (400 m) |  | 20d | 2027-09-28 | 2027-10-25 | S4M010, S4I050 SS+3d | -49d | Pipefitting Crew (chilled water) [960 h] | 584,700.58 |
| S4I100 |  | Hall 4 aspirating smoke detection and suppression |  | 18d | 2027-10-07 | 2027-11-01 | S4I040, PR4160 | -24d | Fire Detection & Suppression Crew [864 h] | 389,804.33 |
| S4I120 |  | Hall 4 access control, CCTV and structured cabling |  | 14d | 2027-10-07 | 2027-10-26 | S4I040, S1I160 | -20d | ELV / Security / Data Crew [448 h] | 262,662.42 |
| S4I130 |  | Hall 4 plant room finishes, signage and labelling |  | 10d | 2027-10-07 | 2027-10-20 | S4I040 | 39d | Fit-Out Crew (partitions, finishes) [800 h] | 139,022.91 |
| S4I030 |  | Hall 4 LV switchboards, distribution and busway (240 m) |  | 20d | 2027-10-20 | 2027-11-16 | S4I020, PR4125 | -50d | Electrical Crew (LV/containment/cabling) [1280 h] | 464,572.56 |
| S4I065 |  | Hall 4 pipework insulation, pressure test and flush |  | 12d | 2027-10-26 | 2027-11-10 | S4I060 | -49d | Pipe & Duct Insulation Crew [384 h] | 174,335 |
| S4I110 |  | Hall 4 BMS/DCIM extension, metering and integration |  | 18d | 2027-11-11 | 2027-12-07 | S4I040, S4I065, S1I150 | -49d | BMS / DCIM Crew [576 h] | 305,833.14 |
| S4I090 |  | Hall 4 cold-aisle containment framework and blanking |  | 12d | 2027-11-17 | 2027-12-02 | S4I080, S4I030 | -50d | Fit-Out Crew (partitions, finishes) [960 h] | 205,048.54 |

| ID | WBS | Activity | Type | Duration | Start | Finish | Predecessors | Total float | Constraint | Calendar | Resources | Cost |
| --- | --- | --- | --- | --- | --- | --- | --- | --- | --- | --- | --- | --- |
|  | PDC.9.4 | **S4 Administration & NOC Block** |  |  | 2026-11-18 | 2028-02-24 |  |  |  |  |  |  |
| S4A000 |  | Bulk excavation and foundations - administration / NOC block |  | 12d | 2026-11-18 | 2026-12-03 | S4F010 | 127d |  |  | Concrete Crew (form/rebar/pour) [960 h] | 71,556.74 |
| S4A010 |  | Ground slab and first-floor structure - administration / NOC block |  | 14d | 2026-12-04 | 2026-12-23 | S4A000 | 127d |  |  | Concrete Crew (form/rebar/pour) [2240 h] | 107,526.57 |
| S4A020 |  | Steel frame and metal deck - administration / NOC block (50 t) |  | 8d | 2026-12-28 | 2027-01-08 | S4A010, PR4035 | 127d |  |  | Structural Steel Erection Crew [640 h] | 62,503.49 |
| S4A030 |  | Envelope, roof and cladding - administration / NOC block (1,100 m2) |  | 16d | 2027-01-11 | 2027-02-01 | S4A020 | 127d |  |  | Envelope / Cladding Crew [768 h] | 277,200.32 |
| S4A040 |  | MEP first fix - administration / NOC block |  | 20d | 2027-02-02 | 2027-03-01 | S4A030 | 127d |  |  | Mechanical Crew (plant, ductwork) [1280 h] | 737,211.79 |
| S4A050 |  | Suspended ceilings, partitions and painted finishes - admin / NOC |  | 18d | 2027-03-02 | 2027-03-25 | S4A040 | 127d |  |  | Fit-Out Crew (partitions, finishes) [2880 h] | 281,941.75 |
| S4A060 |  | Admin / NOC fit-out, joinery, sanitaryware and NOC raised floor |  | 20d | 2027-03-30 | 2027-04-26 | S4A050 | 127d |  |  | Fit-Out Crew (partitions, finishes) [3200 h] | 1,045,747.57 |
| S4C000 |  | L2 site delivery and static inspection - Section 4 |  | 10d | 2027-10-20 | 2027-11-02 | S4I020, S4I050 | -28d |  | Commissioning & handover 5d (Fin hols, works through wk28-30) | Commissioning Team (Mech + Elec + DC specialist) [480 h] |  |
| S4C010 |  | L3 component start-up - mechanical (Section 4) |  | 18d | 2027-11-11 | 2027-12-07 | S4C000, S4I065 | -34d |  | Commissioning & handover 5d (Fin hols, works through wk28-30) | Commissioning Team (Mech + Elec + DC specialist) [864 h] | 10,231.08 |
| S4C020 |  | L3 component start-up - electrical (Section 4) |  | 18d | 2027-12-03 | 2027-12-30 | S4C000, S4I030, S4I090 | -50d |  | Commissioning & handover 5d (Fin hols, works through wk28-30) | Commissioning Team (Mech + Elec + DC specialist) [864 h] | 6,820.72 |
| S4A070 |  | NOC systems, DCIM workstations and security console integration |  | 12d | 2027-12-08 | 2027-12-23 | S4A060, S4I110 | -16d |  |  | ELV / Security / Data Crew [384 h] | 290,938.59 |
| S4C030 |  | L3 BMS/DCIM, fire and security functional testing (Section 4) |  | 15d | 2027-12-08 | 2027-12-29 | S4I110, S4I100, S4I120 | -49d |  | Commissioning & handover 5d (Fin hols, works through wk28-30) | Commissioning Team (Mech + Elec + DC specialist) [720 h] | 3,410.36 |
| S4C040 |  | L4a Integrated systems testing - non-utility-dependent (Section 4) |  | 12d | 2027-12-31 | 2028-01-18 | S4C010, S4C020, S4C030, S1C080 | -50d |  | Commissioning & handover 5d (Fin hols, works through wk28-30) | Commissioning Team (Mech + Elec + DC specialist) [576 h] | 54,565.78 |
| S4C070 |  | Section 4 as-built drawings, O&M manuals, training and certificates |  | 12d | 2028-01-10 | 2028-01-25 | S4C040 SS+5d | -32d |  | Commissioning & handover 5d (Fin hols, works through wk28-30) | Commissioning Team (Mech + Elec + DC specialist) [576 h] | 35,808.79 |
| MSS4C045 |  | M: DNO Stage 4 capacity release (31 Jan 2028, GC 3.3) | milestone | 0d | 2028-01-31 | 2028-01-31 | DE2145, S4C020 | -59d | start on 2028-01-31 | Commissioning & handover 5d (Fin hols, works through wk28-30) |  |  |
| S4C050 |  | L4b Integrated systems testing - loss of utility and failure modes (Section 4) |  | 8d | 2028-02-01 | 2028-02-10 | S4C040, MSS4C045 | -59d |  | Commissioning & handover 5d (Fin hols, works through wk28-30) | Commissioning Team (Mech + Elec + DC specialist) [384 h] | 38,196.04 |
| S4C060 |  | L5 24 h integrated load-bank test at full Section 4 load (2.5 MW) |  | 5d | 2028-02-11 | 2028-02-17 | S4C050, MS3105 | -59d |  | Commissioning & handover 5d (Fin hols, works through wk28-30) | Commissioning Team (Mech + Elec + DC specialist) [240 h] | 131,217.7 |
| S4C080 |  | Sectional occupancy inspection - Section 4 (kayttoonottotarkastus) |  | 5d | 2028-02-18 | 2028-02-24 | S4C060, S4C070, S4I130 | -44d |  | Design / Procurement / Authority 5d (Fin hols) | Project & Site Management (incl. statutory supervisors) [360 h] | 22,216.07 |
| S4C090 |  | Tenant technical acceptance and sign-off - Hall 4 |  | 5d | 2028-02-18 | 2028-02-24 | S4C060 | -59d |  | Commissioning & handover 5d (Fin hols, works through wk28-30) | Commissioning Team (Mech + Elec + DC specialist) [240 h] |  |
|  | PDC.9.5 | **S4 External Works, Security & Landscaping** |  |  | 2026-12-21 | 2027-11-09 |  |  |  |  |  |  |
| S4X000 |  | Stormwater attenuation, oil separators and discharge control (Cond 19/20) |  | 20d | 2026-12-21 | 2027-01-21 | S4F040, PR4170 | 164d |  |  | Civil Crew (trenching, drainage, roads) [1920 h] | 604,800.58 |
| S4X010 |  | Foul, water and utility connections - SW corner chamber |  | 15d | 2026-12-30 | 2027-01-21 | S4X000 SS+5d | 219d |  |  | Civil Crew (trenching, drainage, roads) [720 h] | 436,099.09 |
| S4X020 |  | Roads, hardstanding and service yard (9,800 m2) |  | 20d | 2027-02-02 | 2027-03-01 | S4X000, S4A030 | 157d |  |  | Civil Crew (trenching, drainage, roads) [1920 h] | 614,073.42 |
| S4X030 |  | External lighting and small power |  | 10d | 2027-03-02 | 2027-03-15 | S4X020 | 157d |  |  | Electrical Crew (LV/containment/cabling) [640 h] | 304,121.73 |
| S4X040 |  | Landscaping and 2:1 tree replacement (Cond 21/22) |  | 15d | 2027-03-09 | 2027-03-31 | S4X020, S4X030 SS+5d | 157d |  |  | Landscaping Crew [480 h] | 212,311.4 |
| S4X050 |  | Perimeter security completion, gates and final ANPR commissioning |  | 10d | 2027-10-27 | 2027-11-09 | S4X020, S4I120 | 15d |  |  | ELV / Security / Data Crew [320 h] | 231,600.45 |

| ID | WBS | Activity | Type | Duration | Start | Finish | Predecessors | Total float | Constraint | Calendar | Resources | Cost |
| --- | --- | --- | --- | --- | --- | --- | --- | --- | --- | --- | --- | --- |
|  | PDC.9.6 | **S4 Commissioning & Handover** |  |  | 2028-02-25 | 2028-03-23 |  |  |  |  |  |  |
| S4Z000 |  | Final punch list rectification - whole of the Works |  | 15d | 2028-02-25 | 2028-03-16 | S4C090, S4A070, S4X040, S4X050, PM1040 | -59d |  |  | Fit-Out Crew (partitions, finishes) [2400 h] | 67,281.55 |
| S4Z010 |  | Lodge complete as-built set, statutory certificates and vibration record (Cond 8) |  | 10d | 2028-03-03 | 2028-03-16 | DE2160, S4C070, S4Z000 SS+5d | -59d |  | Design / Procurement / Authority 5d (Fin hols) | Design & Engineering Team [1120 h] | 31,830.04 |
| S4Z020 |  | Final occupancy inspection - whole permitted scope (Cond 7) |  | 5d | 2028-03-17 | 2028-03-23 | S4Z000, S4Z010, DH9100, S4C080, S4X010 | -59d |  | Design / Procurement / Authority 5d (Fin hols) | Project & Site Management (incl. statutory supervisors) [360 h] | 29,621.42 |
|  | PDC.10 | **District Heating / Waste-Heat Interface** |  |  | 2026-10-02 | 2027-12-15 |  |  |  |  |  |  |
| DH9000 |  | Boundary chamber civil works, flanged connection and isolation valves |  | 15d | 2026-10-02 | 2026-10-22 | S1F140, PR4070 | 194d |  |  | Civil Crew (trenching, drainage, roads) [720 h] | 96,688.26 |
| DH9020 |  | Install waste-heat recovery plant, 4 MW at 70 C flow |  | 30d | 2027-01-14 | 2027-02-24 | PR4090, S1M060 | 122d |  |  | Mechanical Crew (plant, ductwork) [1920 h] | 3,753,212.53 |
| DH9010 |  | Heat recovery pipework - plant room to site boundary chamber (260 m) |  | 13d | 2027-03-09 | 2027-03-25 | DH9000, S1M000 | 101d |  |  | Pipefitting Crew (chilled water) [624 h] | 225,605.95 |
| DH9030 |  | Heat metering skid, calibration and remote read-out to the Offtaker |  | 10d | 2027-03-30 | 2027-04-12 | DH9010, DH9020 | 101d |  |  | Mechanical Crew (plant, ductwork) [640 h] |  |
| DH9060 |  | Issue as-built heat plant documentation and cause-and-effect to the Offtaker (DH 2.4) |  | 10d | 2027-04-13 | 2027-04-26 | DH9030 | 138d |  | Design / Procurement / Authority 5d (Fin hols) | Design & Engineering Team [1120 h] |  |
| MS9040 |  | M: Employer's boundary works ready for the Offtaker (DH 7.2, by 1 Jul 2027) | milestone | 0d | 2027-04-13 | 2027-04-13 | DH9030 | 101d |  |  |  |  |
| DH9050 |  | Offtaker network-side boundary works and reinforcement (DH 7.1, by 31 Aug 2027) |  | 45d | 2027-04-14 | 2027-05-28 | MS9040 | 164d |  | 7-day elapsed (manufacture & third party) | Third Party (DNO / Offtaker / Authority) |  |
| DH9070 |  | L3 commissioning of the waste-heat recovery plant |  | 15d | 2027-05-13 | 2027-06-02 | DH9030, S1C010 | 112d |  | Commissioning & handover 5d (Fin hols, works through wk28-30) | Commissioning Team (Mech + Elec + DC specialist) [720 h] | 17,051.81 |
| DH9080 |  | Serve 20 working days notice of the 72 h witnessed heat delivery test (DH 6.2) |  | 20d | 2027-06-03 | 2027-07-01 | DH9070, DH9060, DH9050 | 112d |  | Design / Procurement / Authority 5d (Fin hols) | Project & Site Management (incl. statutory supervisors) [1440 h] |  |
| DH9090 |  | 72 h witnessed waste-heat delivery test, 4 MW at 70 C (heating season only) |  | 6d | 2027-11-30 | 2027-12-08 | DH9080, MS3C100 | 5d | start on 2027-10-01 | Commissioning & handover 5d (Fin hols, works through wk28-30) | Commissioning Team (Mech + Elec + DC specialist) [288 h] | 38,975.56 |
| DH9100 |  | Lodge district-heating demonstration evidence with Building Control (Cond 23) |  | 5d | 2027-12-09 | 2027-12-15 | DH9090 | 5d |  | Design / Procurement / Authority 5d (Fin hols) | Project & Site Management (incl. statutory supervisors) [360 h] |  |
|  | PDC.11 | **Contract Milestones** |  |  | 2025-12-12 | 2028-03-24 |  |  |  |  |  |  |
| MS0000 |  | M: Base Date (12 Dec 2025) - advance procurement release | milestone | 0d | 2025-12-12 | 2025-12-12 |  | -30d | start on 2025-12-12 | Design / Procurement / Authority 5d (Fin hols) |  |  |
| MS0010 |  | M: Commencement Date (2 Mar 2026) | milestone | 0d | 2026-03-02 | 2026-03-02 | MS0000 | -58d | start on 2026-03-02 | Design / Procurement / Authority 5d (Fin hols) |  |  |
| MS1C140 |  | M: SECTION 1 TAKING OVER (contract date 2 May 2027) | milestone | 0d | 2027-07-15 | 2027-07-15 | S1C110, S1C120 | -52d |  | Design / Procurement / Authority 5d (Fin hols) |  |  |
| MS2C100 |  | M: SECTION 2 TAKING OVER (contract date 2 Jul 2027) | milestone | 0d | 2027-10-08 | 2027-10-08 | S2C080, S2C090 | -70d |  | Design / Procurement / Authority 5d (Fin hols) |  |  |
| MS3C100 |  | M: SECTION 3 TAKING OVER (contract date 2 Oct 2027) | milestone | 0d | 2027-11-29 | 2027-11-29 | S3C080, S3C090 | -41d |  | Design / Procurement / Authority 5d (Fin hols) |  |  |
| MS4C100 |  | M: SECTION 4 TAKING OVER / WHOLE OF THE WORKS (contract date 2 Jan 2028) | milestone | 0d | 2028-03-24 | 2028-03-24 | S4Z020, S4C090, MS1C140, MS2C100, MS3C100, PM1030, PM1050 | -59d |  | Design / Procurement / Authority 5d (Fin hols) |  |  |
