# Polaris DC-1 - Aviapolis Data Campus Phase 1

Schedule from Primavera P6, 2026-01-16 to 2028-01-19, data date 2026-03-02, costs in EUR.
Must finish by 2028-01-19

## Resources

| Resource | Group |
| --- | --- |
| Design mgmt | labor |
| Design | labor |
| Design/QA | labor |
| Site mgmt | labor |
| Site est. | labor |
| M&E | labor |
| Crane | labor |
| EHS | labor |
| Site management & QA/QC | labor |
| EHS/Permitting | labor |
| Specialist | labor |
| Geotech | labor |
| Groundworks | labor |
| Excavation gang | labor |
| Groundworks + watching brief | labor |
| Concrete gang | labor |
| Plant gang | labor |
| Concrete/finishing gang | labor |
| Blasting specialist | labor |
| Piling/rock gang | labor |
| Waterproofing gang | labor |
| Steel erection gang | labor |
| Steel fixing gang | labor |
| Precast erection gang | labor |
| Fire protection gang | labor |
| Cladding gang | labor |
| Roofing gang | labor |
| Doors installer | labor |
| Airtightness specialist | labor |
| HV electrical | labor |
| Electrical design | labor |
| Generator install crew | labor |
| Mechanical fit-out | labor |
| Controls electrical | labor |
| Mechanical install | labor |
| Mechanical pipefitters | labor |
| Groundworks/M&E | labor |
| Electrical install | labor |
| Controls | labor |
| Security systems | labor |
| ICT fit-out | labor |
| HV/LV electrical | labor |
| LV electrical | labor |
| UPS specialist | labor |
| Finishes gang | labor |
| Containment fitters | labor |
| Partitions gang | labor |
| Fire systems | labor |
| Fit-out gang | labor |
| Civils gang | labor |
| Fencing gang | labor |
| Civils/ICT gang | labor |
| Landscaping gang | labor |
| Commissioning engineer | labor |
| Commissioning team | labor |
| Non-labour cost (procurement, plant, statutory fees) | material |

## Schedule

| ID | WBS | Activity | Type | Duration | Start | Finish | Predecessors | Total float | Resources | Cost |
| --- | --- | --- | --- | --- | --- | --- | --- | --- | --- | --- |
|  | 01 | **Design, Engineering & Approvals** |  |  | 2026-03-02 | 2026-11-24 |  |  |  |  |
| D-MOB |  | Design team mobilisation |  | 8d | 2026-03-02 | 2026-03-11 | MS-COMM | 15d | Design mgmt [384 h] |  |
| MS-COMM |  | Commencement Date (Contract) | milestone | 0d | 2026-03-02 | 2026-03-02 |  | 0d |  |  |
| D-S1 |  | S1 Concept design -- site-wide, single-line diagrams, cooling strategy |  | 20d | 2026-03-11 | 2026-04-09 | D-MOB | 15d | Design [1600 h] |  |
| MS-S1SUB |  | S1 Concept design submitted | milestone | 0d | 2026-04-09 | 2026-04-09 | D-S1 | 15d |  |  |
| D-S1REV |  | Engineer review of S1 (14-day period, PC SP-20) |  | 10d | 2026-04-10 | 2026-04-23 | MS-S1SUB FS+3d | 18d |  |  |
| D-S2 |  | S2 Detailed design -- all disciplines, calculations |  | 48d | 2026-04-23 | 2026-07-02 | MS-S1APP | 419d | Design [5376 h] |  |
| MS-S1APP |  | S1 Concept design approved | milestone | 0d | 2026-04-23 | 2026-04-23 | D-S1REV | 18d |  |  |
| D-SUBIFC |  | IFC package -- substructure & foundations (fast-track release straight off S1 concept + supplementary geotech; substructure design does not wait for full S2) |  | 15d | 2026-04-27 | 2026-05-19 | MS-S1APP FS+6d, P-GEOSUPP | 15d | Design [720 h] |  |
| D-STLIFC |  | IFC package -- structural steel (early release for 18wk fabrication lead) |  | 10d | 2026-04-28 | 2026-05-12 | MS-S1APP FS+15d | 52d | Design [480 h] |  |
| MS-STLIFC |  | Structural steel IFC issued | milestone | 0d | 2026-05-12 | 2026-05-12 | D-STLIFC | 52d |  |  |
| MS-SUBIFC |  | Substructure IFC issued | milestone | 0d | 2026-05-19 | 2026-05-19 | D-SUBIFC | 15d |  |  |
| MS-S2SUB |  | S2 Detailed design submitted | milestone | 0d | 2026-07-02 | 2026-07-02 | D-S2 | 419d |  |  |
| D-S2REV |  | Engineer review of S2 (21-day period, PC SP-20) |  | 15d | 2026-07-03 | 2026-08-13 | MS-S2SUB FS+3d | 398d |  |  |
| D-S3 |  | S3 Construction-issue design -- shop drawings & schedules |  | 35d | 2026-08-13 | 2026-09-30 | MS-S2APP | 398d | Design [2800 h] |  |
| MS-S2APP |  | S2 Detailed design approved | milestone | 0d | 2026-08-13 | 2026-08-13 | D-S2REV | 398d |  |  |
| MS-S3SUB |  | S3 construction-issue design submitted | milestone | 0d | 2026-09-30 | 2026-09-30 | D-S3 | 398d |  |  |
| D-S3REV |  | Engineer review of S3 (14-day period, PC SP-20) |  | 10d | 2026-10-01 | 2026-10-14 | MS-S3SUB FS+3d | 398d |  |  |
| D-ASBLT |  | As-built documentation, O&M manuals & training records (S4, rolling per Section) |  | 30d | 2026-10-14 | 2026-11-24 | MS-S3APP | 400d | Design/QA [960 h] |  |
| MS-S3APP |  | S3 construction-issue design approved | milestone | 0d | 2026-10-14 | 2026-10-14 | D-S3REV | 398d |  |  |
|  | 02 | **Mobilisation, Permits & Site Enabling** |  |  | 2026-03-02 | 2028-01-19 |  |  |  |  |
| M-SITE |  | Site establishment -- offices, welfare, hoarding (BOQ A.01) |  | 15d | 2026-03-02 | 2026-03-20 | MS-COMM | 63d | Site est. [960 h] | 1,218,548.83 |
| P-ARCH |  | Archaeological desk-based assessment, NW corner made-ground area (risk mitigation, cond.24) |  | 15d | 2026-03-02 | 2026-03-20 | MS-COMM | 105d | Specialist [240 h] |  |
| P-BLAST |  | Blasting permit application & pre-condition survey of neighbours (permit cond.9-13; MS-04/05) |  | 25d | 2026-03-02 | 2026-04-07 | MS-COMM | 211d | EHS/Permitting [400 h] |  |
| P-GEOSUPP |  | Supplementary geotechnical investigation -- boreholes between BH-07/BH-08/BH-09 (close out unresolved boulder horizon) |  | 15d | 2026-03-02 | 2026-03-20 | MS-COMM | 54d | Geotech [360 h] |  |
| P-SUP |  | Statutory supervisor appointments (vastaava tyonjohtaja, KVV, IV) |  | 10d | 2026-03-02 | 2026-03-13 | MS-COMM | 76d | Site mgmt [240 h] |  |
| SITE-MGMT-STAFF |  | Site management, supervision, QA/QC staff, insurances/bonds & site security (whole Contract period, BOQ A.02/A.05/A.06) |  | 447d | 2026-03-02 | 2028-01-19 | MS-COMM | 0d | Site management & QA/QC [28608 h] | 3,150,671.6 |
| MS-SUPOK |  | Statutory supervisors approved (permit condition; gates site works) | milestone | 0d | 2026-03-13 | 2026-03-13 | P-SUP | 76d |  |  |
| P-COMMNOT |  | Commencement inspection notice (5 working days, permit cond.5) |  | 5d | 2026-03-13 | 2026-03-19 | MS-SUPOK | 76d |  |  |
| M-TEMP |  | Temporary power, water & telecoms (BOQ A.03) |  | 10d | 2026-03-17 | 2026-03-30 | M-SITE FS-9d | 65d | M&E [320 h] | 351,107.29 |
| M-CRANE |  | Tower & mobile cranage mobilisation incl. Fintraffic/Finavia clearance (21-day lead, cond.18) (BOQ A.04) |  | 21d | 2026-03-20 | 2026-04-21 | M-SITE | 164d | Crane [504 h] | 1,012,015.13 |
| M-ENV |  | Environmental controls -- vibration & noise monitoring stations (BOQ A.07) |  | 10d | 2026-03-20 | 2026-04-02 | M-SITE | 216d | EHS [160 h] | 273,657.15 |
| MS-BLASTOK |  | Blasting permit granted & pre-condition survey complete | milestone | 0d | 2026-04-07 | 2026-04-07 | P-BLAST, M-ENV | 211d |  |  |

| ID | WBS | Activity | Type | Duration | Start | Finish | Predecessors | Total float | Resources | Cost |
| --- | --- | --- | --- | --- | --- | --- | --- | --- | --- | --- |
|  | 03 | **Substructure - Hall 1 & Gatehouse (West)** |  |  | 2026-05-19 | 2026-08-28 |  |  |  |  |
| W-CLR |  | Hall 1 & Gatehouse (West): site clearance, topsoil strip & disposal |  | 8d | 2026-05-19 | 2026-05-28 | MS-SUBIFC, MS-SUPOK, P-COMMNOT, M-TEMP | 15d | Groundworks [384 h] | 34,998.05 |
| W-EXC |  | Hall 1 & Gatehouse (West): bulk excavation in glacial till, cart away |  | 15d | 2026-05-28 | 2026-06-17 | W-CLR | 16d | Excavation gang [1920 h] | 111,740.67 |
| W-MADEGRD |  | Hall 1/Gatehouse: removal & replacement of unrecorded made ground, NW corner (provisional; watching brief on standby) |  | 24d | 2026-06-17 | 2026-08-11 | W-EXC, P-ARCH, MS-SUPOK | 15d | Groundworks + watching brief [1152 h] | 112,329.92 |
| W-FND |  | Hall 1 & Gatehouse (West): pad & strip foundations bearing on till (12 nr) |  | 11d | 2026-07-27 | 2026-08-10 | W-MADEGRD SS+51d | 1d | Concrete gang [528 h] | 233,773.03 |
| W-BEAM |  | Hall 1 & Gatehouse (West): ground beams & pile caps |  | 20d | 2026-08-03 | 2026-08-28 | W-FND SS+18d | 0d | Concrete gang [960 h] | 130,992.14 |
| W-SUBBASE |  | Hall 1 & Gatehouse (West): sub-base, capping & geotextile |  | 6d | 2026-08-17 | 2026-08-24 | W-BEAM SS+42d | 0d | Plant gang [192 h] | 136,907.49 |
| W-SLAB |  | Hall 1 & Gatehouse (West): ground-bearing slab 250mm, 25kN/m2, FM2 flatness |  | 6d | 2026-08-21 | 2026-08-28 | W-SUBBASE SS+12d | 0d | Concrete/finishing gang [768 h] | 475,149.52 |
| W-SUBDONE |  | Hall 1 & Gatehouse (West): substructure complete | milestone | 0d | 2026-08-28 | 2026-08-28 | W-SLAB | 0d |  |  |
|  | 04 | **Substructure - Substation & Generator Compound (East)** |  |  | 2026-05-19 | 2026-09-16 |  |  |  |  |
| E-CLR |  | Substation & Generator Compound (East): site clearance, topsoil strip & disposal |  | 8d | 2026-05-19 | 2026-05-28 | MS-SUBIFC, MS-SUPOK, P-COMMNOT, M-TEMP, MS-BLASTOK | 169d | Groundworks [384 h] | 34,998.05 |
| E-EXC |  | Substation & Generator Compound (East): bulk excavation in glacial till, cart away |  | 15d | 2026-05-28 | 2026-06-17 | E-CLR | 169d | Excavation gang [1920 h] | 111,740.67 |
| E-BLAST |  | Substation & Generator Compound (East): rock excavation by controlled blasting incl. vibration monitoring (08:00-18:00 Mon-Fri only) |  | 50d | 2026-06-17 | 2026-09-16 | E-EXC | 153d | Blasting specialist [2000 h] | 356,526.85 |
| E-FND |  | Substation & Generator Compound (East): direct-to-rock / rock-socketed foundations (6 nr) |  | 14d | 2026-07-27 | 2026-08-13 | E-BLAST SS+105d | 277d | Piling/rock gang [672 h] | 242,688.1 |
| E-BEAM |  | Substation & Generator Compound (East): ground beams & pile caps |  | 20d | 2026-08-04 | 2026-08-31 | E-FND SS+24d | 275d | Concrete gang [960 h] | 130,992.14 |
| E-WP |  | Substation & Generator Compound: basement/trench waterproofing to cable basement |  | 11d | 2026-08-12 | 2026-08-26 | E-BEAM SS+24d | 275d | Waterproofing gang [352 h] | 174,339.21 |
| E-SUBBASE |  | Substation & Generator Compound (East): sub-base, capping & geotextile |  | 6d | 2026-08-26 | 2026-09-02 | E-BEAM SS+42d, E-WP | 275d | Plant gang [192 h] | 136,907.49 |
| E-SLAB |  | Substation & Generator Compound (East): ground-bearing slab 250mm, 25kN/m2, FM2 flatness |  | 6d | 2026-08-31 | 2026-09-07 | E-SUBBASE SS+12d | 275d | Concrete/finishing gang [768 h] | 475,149.52 |
| E-SUBDONE |  | Substation & Generator Compound (East): substructure complete | milestone | 0d | 2026-09-07 | 2026-09-07 | E-SLAB | 275d |  |  |
|  | 05 | **Substructure - Hall 2** |  |  | 2026-08-28 | 2026-10-23 |  |  |  |  |
| H2-CLR |  | Hall 2 (Central): site clearance, topsoil strip & disposal |  | 6d | 2026-08-28 | 2026-09-04 | MS-SUBIFC, MS-SUPOK, P-COMMNOT, M-TEMP, W-SUBDONE | 0d | Groundworks [288 h] | 27,630.04 |
| H2-EXC |  | Hall 2 (Central): bulk excavation in glacial till, cart away |  | 24d | 2026-09-04 | 2026-10-07 | H2-CLR | 0d | Excavation gang [1536 h] | 88,216.32 |
| H2-FND |  | Hall 2 (Central): pad & strip foundations bearing on till (9 nr) |  | 9d | 2026-09-21 | 2026-10-01 | H2-EXC SS+51d | 4d | Concrete gang [432 h] | 175,329.77 |
| H2-BEAM |  | Hall 2 (Central): ground beams & pile caps |  | 16d | 2026-09-28 | 2026-10-19 | H2-FND SS+15d | 0d | Concrete gang [768 h] | 103,414.85 |
| H2-SUBBASE |  | Hall 2 (Central): sub-base, capping & geotextile |  | 5d | 2026-10-09 | 2026-10-15 | H2-BEAM SS+33d | 0d | Plant gang [160 h] | 108,084.86 |
| H2-SLAB |  | Hall 2 (Central): ground-bearing slab 250mm, 25kN/m2, FM2 flatness |  | 9d | 2026-10-13 | 2026-10-23 | H2-SUBBASE SS+12d | 0d | Concrete/finishing gang [576 h] | 375,118.04 |
| H2-SUBDONE |  | Hall 2 (Central): substructure complete | milestone | 0d | 2026-10-23 | 2026-10-23 | H2-SLAB | 0d |  |  |

| ID | WBS | Activity | Type | Duration | Start | Finish | Predecessors | Total float | Resources | Cost |
| --- | --- | --- | --- | --- | --- | --- | --- | --- | --- | --- |
|  | 06 | **Substructure - Hall 3** |  |  | 2026-10-23 | 2026-12-18 |  |  |  |  |
| H3-CLR |  | Hall 3 (Central): site clearance, topsoil strip & disposal |  | 6d | 2026-10-23 | 2026-10-30 | MS-SUBIFC, MS-SUPOK, P-COMMNOT, M-TEMP, H2-SUBDONE | 0d | Groundworks [288 h] | 27,630.04 |
| H3-EXC |  | Hall 3 (Central): bulk excavation in glacial till, cart away |  | 24d | 2026-10-30 | 2026-12-02 | H3-CLR | 0d | Excavation gang [1536 h] | 88,216.32 |
| H3-FND |  | Hall 3 (Central): pad & strip foundations bearing on till (9 nr) |  | 9d | 2026-11-16 | 2026-11-26 | H3-EXC SS+51d | 4d | Concrete gang [432 h] | 175,329.77 |
| H3-BEAM |  | Hall 3 (Central): ground beams & pile caps |  | 16d | 2026-11-23 | 2026-12-14 | H3-FND SS+15d | 0d | Concrete gang [768 h] | 103,414.85 |
| H3-SUBBASE |  | Hall 3 (Central): sub-base, capping & geotextile |  | 5d | 2026-12-04 | 2026-12-10 | H3-BEAM SS+33d | 0d | Plant gang [160 h] | 108,084.86 |
| H3-SLAB |  | Hall 3 (Central): ground-bearing slab 250mm, 25kN/m2, FM2 flatness |  | 9d | 2026-12-08 | 2026-12-18 | H3-SUBBASE SS+12d | 4d | Concrete/finishing gang [576 h] | 375,118.04 |
| H3-SUBDONE |  | Hall 3 (Central): substructure complete | milestone | 0d | 2026-12-18 | 2026-12-18 | H3-SLAB | 4d |  |  |
|  | 07 | **Substructure - Hall 4 & Admin/NOC** |  |  | 2026-12-18 | 2027-04-26 |  |  |  |  |
| H4A-CLR |  | Hall 4 & Admin/NOC (East): site clearance, topsoil strip & disposal |  | 13d | 2026-12-18 | 2027-01-11 | MS-SUBIFC, MS-SUPOK, P-COMMNOT, M-TEMP, MS-BLASTOK, H3-SUBDONE | 2d | Groundworks [624 h] | 58,944.09 |
| H4A-EXC |  | Hall 4 & Admin/NOC (East): bulk excavation in glacial till, cart away |  | 25d | 2027-01-11 | 2027-02-12 | H4A-CLR | 4d | Excavation gang [3200 h] | 188,194.81 |
| H4A-BLAST |  | Hall 4 & Admin/NOC (East): rock excavation by controlled blasting incl. vibration monitoring (08:00-18:00 Mon-Fri only) |  | 22d | 2027-02-12 | 2027-03-15 | H4A-EXC, E-BLAST | 2d | Blasting specialist [880 h] | 152,797.22 |
| H4A-FND |  | Hall 4 & Admin/NOC (East): direct-to-rock / rock-socketed foundations (4 nr) |  | 9d | 2027-03-01 | 2027-03-11 | H4A-BLAST SS+45d | 4d | Piling/rock gang [432 h] | 161,792.07 |
| H4A-BEAM |  | Hall 4 & Admin/NOC (East): ground beams & pile caps |  | 34d | 2027-03-08 | 2027-04-26 | H4A-FND SS+15d | 0d | Concrete gang [1632 h] | 220,618.34 |
| H4A-SUBBASE |  | Hall 4 & Admin/NOC (East): sub-base, capping & geotextile |  | 9d | 2027-04-01 | 2027-04-13 | H4A-BEAM SS+72d | 0d | Plant gang [288 h] | 230,581.04 |
| H4A-SLAB |  | Hall 4 & Admin/NOC (East): ground-bearing slab 250mm, 25kN/m2, FM2 flatness |  | 9d | 2027-04-07 | 2027-04-19 | H4A-SUBBASE SS+18d | 0d | Concrete/finishing gang [1152 h] | 800,251.83 |
| H4A-SUBDONE |  | Hall 4 & Admin/NOC (East): substructure complete | milestone | 0d | 2027-04-19 | 2027-04-19 | H4A-SLAB | 0d |  |  |
|  | 08 | **Superstructure & Envelope - Hall 1 & Gatehouse** |  |  | 2026-08-28 | 2026-10-27 |  |  |  |  |
| W-STEEL |  | Hall 1 & Gatehouse (West): structural steel frame -- erect (allocated share 19% of 449.3t) |  | 20d | 2026-08-28 | 2026-09-24 | W-SUBDONE, MS-STLDEL, M-CRANE | 35d | Steel erection gang [2560 h] | 574,353.91 |
| W-DECK |  | Hall 1 & Gatehouse (West): metal deck, roof purlins & side rails |  | 11d | 2026-09-11 | 2026-09-25 | W-STEEL SS+42d | 49d | Steel fixing gang [528 h] | 245,171.3 |
| W-PRECAST |  | Hall 1 & Gatehouse (West): precast concrete wall panels, 2h fire rating between halls (64 nr) |  | 25d | 2026-09-11 | 2026-10-15 | W-STEEL SS+42d, MS-PRECAST-DEL | 35d | Precast erection gang [1600 h] | 617,387.37 |
| W-FIREPROT |  | Hall 1 & Gatehouse (West): intumescent & cementitious fire protection to steel |  | 7d | 2026-09-17 | 2026-09-25 | W-DECK SS+18d | 56d | Fire protection gang [224 h] | 123,772.55 |
| W-ROOF |  | Hall 1 & Gatehouse (West): warm roof build-up incl. PIR insulation & single-ply membrane, U=0.09 |  | 9d | 2026-09-21 | 2026-10-01 | W-DECK SS+27d | 50d | Roofing gang [864 h] | 322,475.15 |
| W-CLAD |  | Hall 1 & Gatehouse (West): insulated composite cladding to data hall, U=0.17 |  | 16d | 2026-09-25 | 2026-10-16 | W-PRECAST SS+42d | 35d | Cladding gang [2048 h] | 382,047.04 |
| W-DOORS |  | Hall 1 & Gatehouse (West): personnel & equipment doors |  | 5d | 2026-10-12 | 2026-10-16 | W-CLAD SS+48d | 35d | Doors installer [120 h] | 81,851.8 |
| W-AIRTIGHT |  | Hall 1 & Gatehouse (West): airtightness works & testing, q50<=1.0 |  | 8d | 2026-10-16 | 2026-10-27 | W-ROOF, W-CLAD, W-DOORS, W-FIREPROT | 35d | Airtightness specialist [128 h] | 54,951.65 |
| W-ENVDONE |  | Hall 1 & Gatehouse (West): shell & core (structure + envelope) complete | milestone | 0d | 2026-10-27 | 2026-10-27 | W-AIRTIGHT | 35d |  |  |

| ID | WBS | Activity | Type | Duration | Start | Finish | Predecessors | Total float | Resources | Cost |
| --- | --- | --- | --- | --- | --- | --- | --- | --- | --- | --- |
|  | 09 | **Superstructure & Envelope - Substation & Generator Compound** |  |  | 2026-09-07 | 2026-11-17 |  |  |  |  |
| E-STEEL |  | Substation & Generator Compound (East): structural steel frame -- erect (allocated share 19% of 449.3t) |  | 20d | 2026-09-07 | 2026-10-02 | E-SUBDONE, MS-STLDEL, M-CRANE | 278d | Steel erection gang [2560 h] | 574,353.91 |
| E-DECK |  | Substation & Generator Compound (East): metal deck, roof purlins & side rails |  | 11d | 2026-09-21 | 2026-10-05 | E-STEEL SS+42d | 323d | Steel fixing gang [528 h] | 245,171.3 |
| E-PRECAST |  | Substation & Generator Compound: precast panels to spine, substation & generator enclosure |  | 29d | 2026-09-21 | 2026-10-29 | E-STEEL SS+42d, MS-PRECAST-DEL | 299d | Precast erection gang [3712 h] | 1,343,725.45 |
| E-FIREPROT |  | Substation & Generator Compound (East): intumescent & cementitious fire protection to steel |  | 7d | 2026-09-28 | 2026-10-06 | E-DECK SS+18d | 329d | Fire protection gang [224 h] | 123,772.55 |
| E-ROOF |  | Substation & Generator Compound (East): warm roof build-up incl. PIR insulation & single-ply membrane, U=0.09 |  | 9d | 2026-09-30 | 2026-10-12 | E-DECK SS+27d | 323d | Roofing gang [864 h] | 322,475.15 |
| E-CLAD |  | Substation & Generator Compound (East): cladding to substation & generator enclosure |  | 23d | 2026-10-07 | 2026-11-06 | E-PRECAST SS+48d | 298d | Cladding gang [2944 h] | 528,775.4 |
| E-DOORS |  | Substation & Generator Compound (East): personnel & equipment doors |  | 5d | 2026-10-30 | 2026-11-05 | E-CLAD SS+69d | 299d | Doors installer [120 h] | 81,851.8 |
| E-AIRTIGHT |  | Substation & Generator Compound (East): airtightness works & testing, q50<=1.0 |  | 8d | 2026-11-06 | 2026-11-17 | E-ROOF, E-CLAD, E-DOORS, E-FIREPROT | 296d | Airtightness specialist [128 h] | 54,951.65 |
| E-ENVDONE |  | Substation & Generator Compound (East): shell & core (structure + envelope) complete | milestone | 0d | 2026-11-17 | 2026-11-17 | E-AIRTIGHT | 296d |  |  |
|  | 10 | **Superstructure & Envelope - Hall 2** |  |  | 2026-10-27 | 2027-01-07 |  |  |  |  |
| H2-STEEL |  | Hall 2 (Central): structural steel frame -- erect (allocated share 15% of 449.3t) |  | 31d | 2026-10-27 | 2026-12-08 | H2-SUBDONE, MS-STLDEL, M-CRANE, W-ENVDONE | 41d | Steel erection gang [1984 h] | 453,437.3 |
| H2-DECK |  | Hall 2 (Central): metal deck, roof purlins & side rails |  | 9d | 2026-11-18 | 2026-11-30 | H2-STEEL SS+66d | 46d | Steel fixing gang [432 h] | 193,556.29 |
| H2-PRECAST |  | Hall 2 (Central): precast concrete wall panels, 2h fire rating between halls (64 nr) |  | 25d | 2026-11-18 | 2026-12-22 | H2-STEEL SS+66d, MS-PRECAST-DEL | 41d | Precast erection gang [1600 h] | 617,387.37 |
| H2-FIREPROT |  | Hall 2 (Central): intumescent & cementitious fire protection to steel |  | 5d | 2026-11-23 | 2026-11-27 | H2-DECK SS+15d | 62d | Fire protection gang [160 h] | 97,715.17 |
| H2-ROOF |  | Hall 2 (Central): warm roof build-up incl. PIR insulation & single-ply membrane, U=0.09 |  | 13d | 2026-11-26 | 2026-12-14 | H2-DECK SS+24d | 45d | Roofing gang [624 h] | 254,585.65 |
| H2-CLAD |  | Hall 2 (Central): insulated composite cladding to data hall, U=0.17 |  | 16d | 2026-12-02 | 2026-12-23 | H2-PRECAST SS+42d | 36d | Cladding gang [2048 h] | 382,047.04 |
| H2-DOORS |  | Hall 2 (Central): personnel & equipment doors |  | 4d | 2026-12-18 | 2026-12-23 | H2-CLAD SS+48d | 36d | Doors installer [96 h] | 64,619.84 |
| H2-AIRTIGHT |  | Hall 2 (Central): airtightness works & testing, q50<=1.0 |  | 8d | 2026-12-23 | 2027-01-07 | H2-ROOF, H2-CLAD, H2-DOORS, H2-FIREPROT | 32d | Airtightness specialist [128 h] | 43,382.88 |
| H2-ENVDONE |  | Hall 2 (Central): shell & core (structure + envelope) complete | milestone | 0d | 2027-01-07 | 2027-01-07 | H2-AIRTIGHT | 32d |  |  |
|  | 11 | **Superstructure & Envelope - Hall 3** |  |  | 2027-01-07 | 2027-03-16 |  |  |  |  |
| H3-STEEL |  | Hall 3 (Central): structural steel frame -- erect (allocated share 15% of 449.3t) |  | 31d | 2027-01-07 | 2027-02-18 | H3-SUBDONE, MS-STLDEL, M-CRANE, H2-ENVDONE | 32d | Steel erection gang [1984 h] | 453,437.3 |
| H3-DECK |  | Hall 3 (Central): metal deck, roof purlins & side rails |  | 9d | 2027-01-29 | 2027-02-10 | H3-STEEL SS+66d | 41d | Steel fixing gang [432 h] | 193,556.29 |
| H3-PRECAST |  | Hall 3 (Central): precast concrete wall panels, 2h fire rating between halls (64 nr) |  | 25d | 2027-01-29 | 2027-03-04 | H3-STEEL SS+66d, MS-PRECAST-DEL | 34d | Precast erection gang [1600 h] | 617,387.37 |
| H3-FIREPROT |  | Hall 3 (Central): intumescent & cementitious fire protection to steel |  | 5d | 2027-02-03 | 2027-02-09 | H3-DECK SS+15d | 58d | Fire protection gang [160 h] | 97,715.17 |
| H3-ROOF |  | Hall 3 (Central): warm roof build-up incl. PIR insulation & single-ply membrane, U=0.09 |  | 13d | 2027-02-08 | 2027-02-24 | H3-DECK SS+24d | 43d | Roofing gang [624 h] | 254,585.65 |
| H3-CLAD |  | Hall 3 (Central): insulated composite cladding to data hall, U=0.17 |  | 16d | 2027-02-12 | 2027-03-05 | H3-PRECAST SS+42d | 34d | Cladding gang [2048 h] | 382,047.04 |
| H3-DOORS |  | Hall 3 (Central): personnel & equipment doors |  | 4d | 2027-03-01 | 2027-03-04 | H3-CLAD SS+48d | 35d | Doors installer [96 h] | 64,619.84 |
| H3-AIRTIGHT |  | Hall 3 (Central): airtightness works & testing, q50<=1.0 |  | 8d | 2027-03-05 | 2027-03-16 | H3-ROOF, H3-CLAD, H3-DOORS, H3-FIREPROT | 34d | Airtightness specialist [128 h] | 43,382.88 |
| H3-ENVDONE |  | Hall 3 (Central): shell & core (structure + envelope) complete | milestone | 0d | 2027-03-16 | 2027-03-16 | H3-AIRTIGHT | 34d |  |  |

| ID | WBS | Activity | Type | Duration | Start | Finish | Predecessors | Total float | Calendar | Resources | Cost |
| --- | --- | --- | --- | --- | --- | --- | --- | --- | --- | --- | --- |
|  | 12 | **Superstructure & Envelope - Hall 4 & Admin/NOC** |  |  | 2027-04-19 | 2027-08-19 |  |  |  |  |  |
| H4A-STEEL |  | Hall 4 & Admin/NOC (East): structural steel frame -- erect (allocated share 32% of 449.3t) |  | 33d | 2027-04-19 | 2027-06-03 | H4A-SUBDONE, MS-STLDEL, M-CRANE, H3-ENVDONE | 0d |  | Steel erection gang [4224 h] | 967,332.91 |
| H4A-DECK |  | Hall 4 & Admin/NOC (East): metal deck, roof purlins & side rails |  | 19d | 2027-05-12 | 2027-06-07 | H4A-STEEL SS+69d | 56d |  | Steel fixing gang [912 h] | 412,920.09 |
| H4A-PRECAST |  | Hall 4 & Admin/NOC (East): precast concrete wall panels, 2h fire rating between halls (64 nr) |  | 25d | 2027-05-12 | 2027-06-15 | H4A-STEEL SS+69d, MS-PRECAST-DEL | 0d |  | Precast erection gang [1600 h] | 617,387.37 |
| H4A-FIREPROT |  | Hall 4 & Admin/NOC (East): intumescent & cementitious fire protection to steel |  | 11d | 2027-05-24 | 2027-06-07 | H4A-DECK SS+33d | 64d |  | Fire protection gang [352 h] | 208,459.03 |
| H4A-CLAD |  | Hall 4 & Admin/NOC (East): insulated composite cladding to data hall, U=0.17 |  | 16d | 2027-05-26 | 2027-06-16 | H4A-PRECAST SS+42d | 0d |  | Cladding gang [2048 h] | 382,047.04 |
| H4A-ROOF |  | Hall 4 & Admin/NOC (East): warm roof build-up incl. PIR insulation & single-ply membrane, U=0.09 |  | 14d | 2027-05-28 | 2027-06-16 | H4A-DECK SS+48d | 55d |  | Roofing gang [1344 h] | 543,116.04 |
| H4A-CLADADMIN |  | Admin/NOC block: cladding |  | 30d | 2027-06-08 | 2027-08-10 | H4A-CLAD SS+39d | 0d |  | Cladding gang [1440 h] | 352,516.93 |
| H4A-DOORS |  | Hall 4 & Admin/NOC (East): personnel & equipment doors |  | 8d | 2027-06-24 | 2027-07-06 | H4A-CLADADMIN SS+48d | 35d |  | Doors installer [192 h] | 137,855.66 |
| H4A-AIRTIGHT |  | Hall 4 & Admin/NOC (East): airtightness works & testing, q50<=1.0 |  | 8d | 2027-08-10 | 2027-08-19 | H4A-ROOF, H4A-CLADADMIN, H4A-DOORS, H4A-FIREPROT | 0d |  | Airtightness specialist [128 h] | 92,550.15 |
| H4A-ENVDONE |  | Hall 4 & Admin/NOC (East): shell & core (structure + envelope) complete | milestone | 0d | 2027-08-19 | 2027-08-19 | H4A-AIRTIGHT | 0d |  |  |  |
|  | 13 | **Primary MEP Infrastructure (HV, Generation, Primary Cooling Plant)** |  |  | 2026-01-16 | 2027-10-07 |  |  |  |  |  |
| PR-TXFAB |  | HV transformers - factory manufacture, FAT and shipping (52-week lead, PDC-LT-001 LT-01) |  | 121.33d | 2026-01-16 | 2027-01-14 | PR-TXORDER | 90.67d | Off-site Supplier/Fabrication (7-day continuous) |  |  |
| PR-TXORDER |  | HV transformers (2 nr, 16 MVA) order placed [ASSUMPTION: Advance Procurement Instruction issued 2026-01-16 (6.4wk pre-Commencement), per PDC-LT-001 LT-01 order-by date - see BOS risk R-01 for the no-advance-order fallbac | milestone | 0d | 2026-01-16 | 2026-01-16 | MS-COMM FS-135d | 272d |  |  |  |
| PR-GENFAB |  | Generators - factory manufacture, acoustic enclosures and FAT (40-week lead) |  | 93.33d | 2026-03-02 | 2026-12-06 | PR-GENORDER | 92.33d | Off-site Supplier/Fabrication (7-day continuous) |  |  |
| PR-GENORDER |  | Standby generators (8 nr, 2.5 MVA) - order placed [ASSUMPTION: advance procurement instruction at/before Commencement, same as HV transformers - 40-week lead, LT-03 - see BOS risk R-01] | milestone | 0d | 2026-03-02 | 2026-03-02 | MS-COMM | 277d |  |  |  |
| PR-SWGRFAB |  | 20kV switchgear - factory manufacture and FAT (38-week lead) |  | 88.67d | 2026-03-02 | 2026-11-22 | PR-SWGRORDER | 98.33d | Off-site Supplier/Fabrication (7-day continuous) |  |  |
| PR-SWGRORDER |  | 20kV ring main switchgear and protection relays - order placed [ASSUMPTION: advance procurement instruction at/before Commencement, same HV/generation package as transformers & generators - 38-week lead, LT-02 - see BOS | milestone | 0d | 2026-03-02 | 2026-03-02 | MS-COMM | 295d |  |  |  |
| PR-DHCHAMBER |  | District heating boundary chamber and metering skid (site-side civils) |  | 15d | 2026-03-13 | 2026-04-02 | MS-SUPOK | 637d |  | Groundworks/M&E [480 h] | 181,271.24 |
| PR-CHILLERFAB |  | Chillers - factory manufacture and FAT (26-week lead) |  | 60.67d | 2026-04-27 | 2026-10-25 | PR-CHILLERORDER | 84.67d | Off-site Supplier/Fabrication (7-day continuous) |  |  |
| PR-CHILLERORDER |  | Chillers (4 nr, N+1) - order placed (26-week lead, LT-07, within 8wk of award) | milestone | 0d | 2026-04-27 | 2026-04-27 | MS-COMM FS+168d | 253d |  |  |  |
| PRECAST-FAB |  | Precast concrete panel fabrication (TP-002, 16-week lead) |  | 26.67d | 2026-05-12 | 2026-07-30 | MS-STLIFC | 26d | Off-site Supplier/Fabrication (7-day continuous) |  |  |
| STL-FAB |  | Structural steel fabrication (TP-002, 18-week lead from released IFC) |  | 30d | 2026-05-12 | 2026-08-09 | MS-STLIFC | 18d | Off-site Supplier/Fabrication (7-day continuous) |  |  |
| PR-UPSFAB |  | UPS modules - factory manufacture and FAT (30-week lead) |  | 70d | 2026-06-22 | 2027-01-17 | PR-UPSORDER | 57d | Off-site Supplier/Fabrication (7-day continuous) |  |  |
| PR-UPSORDER |  | UPS modules (16 nr, 1000kVA) - order placed (30-week lead, LT-04) | milestone | 0d | 2026-06-22 | 2026-06-22 | MS-COMM FS+330d | 171d |  |  |  |
| PR-DRYCOOLFAB |  | Dry coolers - factory manufacture and FAT (22-week lead) |  | 51.33d | 2026-07-27 | 2026-12-27 | PR-DRYCOOLORDER | 64.67d | Off-site Supplier/Fabrication (7-day continuous) |  |  |
| PR-DRYCOOLORDER |  | Dry coolers / adiabatic units (10 nr) - order placed (22-week lead, LT-08) | milestone | 0d | 2026-07-27 | 2026-07-27 | MS-COMM FS+420d | 193d |  |  |  |
| MS-PRECAST-DEL |  | Precast panels -- first & rolling deliveries to site | milestone | 0d | 2026-07-30 | 2026-07-30 | PRECAST-FAB | 78d |  |  |  |
| PR-BATTFAB |  | Battery systems - factory manufacture and FAT (24-week lead) |  | 56d | 2026-07-30 | 2027-01-13 | PR-BATTORDER | 59d | Off-site Supplier/Fabrication (7-day continuous) |  |  |
| PR-BATTORDER |  | Battery systems (Li-ion, per hall) - order placed (24-week lead, LT-05) | milestone | 0d | 2026-07-30 | 2026-07-30 | MS-COMM FS+450d | 176d |  |  |  |
| PR-LOUVREFAB |  | Acoustic louvres - factory manufacture (16-week lead) |  | 37.33d | 2026-07-30 | 2026-11-18 | PR-LOUVREORDER | 112d | Off-site Supplier/Fabrication (7-day continuous) |  |  |
| PR-LOUVREORDER |  | Acoustic louvres to cooling intake/discharge - order placed (16-week lead, LT-13) | milestone | 0d | 2026-07-30 | 2026-07-30 | MS-COMM FS+450d | 336d |  |  |  |
| MS-STLDEL |  | Structural steel -- first & rolling deliveries to site | milestone | 0d | 2026-08-10 | 2026-08-10 | STL-FAB | 53d |  |  |  |
| PR-PROTSTUDY |  | Protection coordination study - submission and DNO approval (20 working days, PDC-GC-001 s6.3) |  | 20d | 2026-08-13 | 2026-09-09 | MS-S2APP | 439d |  | Electrical design [480 h] | 942,388.77 |
| PR-BUSWAYFAB |  | Overhead busway - factory manufacture (20-week lead) |  | 46.67d | 2026-08-19 | 2027-01-05 | PR-BUSWAYORDER | 61.67d | Off-site Supplier/Fabrication (7-day continuous) |  |  |
| PR-BUSWAYORDER |  | Overhead busway to rack PDUs - order placed (20-week lead, LT-06) | milestone | 0d | 2026-08-19 | 2026-08-19 | MS-COMM FS+510d | 184d |  |  |  |
| PR-EARTHING |  | Earthing, bonding and lightning protection (site-wide backbone) |  | 20d | 2026-09-07 | 2026-10-02 | E-SUBDONE | 396d |  | Electrical install [640 h] | 731,534.66 |
| PR-CRAHFAB |  | CRAH units - factory manufacture and FAT (22-week lead) |  | 51.33d | 2026-09-08 | 2027-02-08 | PR-CRAHORDER | 49.67d | Off-site Supplier/Fabrication (7-day continuous) |  |  |
| PR-CRAHORDER |  | CRAH units (28 nr, 7/hall) - order placed (22-week lead, LT-09) [ACCELERATED ~5.5wk vs PDC-LT-001 order-by date - see BOS risk R-02] | milestone | 0d | 2026-09-08 | 2026-09-08 | MS-COMM FS+570d | 149d |  |  |  |
| PR-SUPPFAB |  | Suppression system - factory manufacture (20-week lead) |  | 46.67d | 2026-09-08 | 2027-01-25 | PR-SUPPORDER | 55d | Off-site Supplier/Fabrication (7-day continuous) |  |  |
| PR-SUPPORDER |  | Gaseous/water-mist suppression system (data halls) - order placed (20-week lead, LT-15, subject to fire engineering approval) | milestone | 0d | 2026-09-08 | 2026-09-08 | MS-COMM FS+570d | 164d |  |  |  |
| MS-PROTOK |  | Protection coordination study approved by DNO | milestone | 0d | 2026-09-09 | 2026-09-09 | PR-PROTSTUDY | 439d |  |  |  |
| PR-WHRFAB |  | Waste-heat recovery plant - factory manufacture and FAT (30-week lead) |  | 70d | 2026-10-02 | 2027-04-29 | PR-WHRORDER | 72d | Off-site Supplier/Fabrication (7-day continuous) |  |  |
| PR-WHRORDER |  | Waste-heat recovery plant (4MW at 70C) - order placed (30-week lead, LT-10) | milestone | 0d | 2026-10-02 | 2026-10-02 | MS-COMM FS+642d | 215d |  |  |  |
| PR-BMSHWFAB |  | BMS/DCIM hardware - factory supply (16-week lead) |  | 37.33d | 2026-10-23 | 2027-02-11 | PR-BMSHWORDER | 81.33d | Off-site Supplier/Fabrication (7-day continuous) |  |  |
| PR-BMSHWORDER |  | BMS/DCIM hardware and licences - order placed (16-week lead, LT-14) [ACCELERATED ~7wk vs PDC-LT-001 order-by date - see BOS risk R-02] | milestone | 0d | 2026-10-23 | 2026-10-23 | MS-COMM FS+705d | 244d |  |  |  |
| MS-CHILLERDEL |  | Chillers delivered to site | milestone | 0d | 2026-10-26 | 2026-10-26 | PR-CHILLERFAB | 253d |  |  |  |
| PR-CHILLERINSTALL |  | Chillers (4 nr) - position and pipe connections |  | 15d | 2026-10-26 | 2026-11-13 | MS-CHILLERDEL, E-SUBDONE | 276d |  | Mechanical install [720 h] | 2,463,429.76 |
| PR-L1FAT |  | L1 factory acceptance testing, witnessed (HV, UPS, gensets, chillers) |  | 10d | 2026-11-12 | 2026-11-25 | PR-TXFAB SS+300d | 342d |  | Commissioning engineer [160 h] | 353,337.31 |
| PR-BMSCORE |  | BMS head-end, servers and BACnet/IP backbone |  | 20d | 2026-11-17 | 2026-12-14 | E-ENVDONE | 303d |  | Controls [480 h] | 505,126.44 |
| PR-CCTVCORE |  | CCTV and access control head-end (90-day retention, 5-layer AC core) |  | 15d | 2026-11-17 | 2026-12-07 | E-ENVDONE | 312d |  | Security systems [360 h] | 486,291.21 |
| PR-FUEL |  | Bulk fuel storage, bunding, polishing and 48h day tanks |  | 15d | 2026-11-17 | 2026-12-07 | E-ENVDONE | 330d |  | Mechanical fit-out [600 h] | 1,269,427.8 |
| PR-MEETME |  | Structured cabling backbone and meet-me room fit-out |  | 15d | 2026-11-17 | 2026-12-07 | E-ENVDONE | 330d |  | ICT fit-out [360 h] | 410,950.32 |
| PR-VENT |  | Ventilation, smoke extract and comfort cooling to ancillary areas (primary share) |  | 15d | 2026-11-17 | 2026-12-07 | E-ENVDONE | 330d |  | Mechanical install [480 h] | 1,123,262 |
| MS-LOUVREDEL |  | Acoustic louvres delivered to site | milestone | 0d | 2026-11-18 | 2026-11-18 | PR-LOUVREFAB | 336d |  |  |  |
| PR-LOUVREINSTALL |  | Acoustic louvres to cooling intake/discharge - install |  | 10d | 2026-11-18 | 2026-12-01 | MS-LOUVREDEL, E-ENVDONE | 336d |  | Cladding gang [320 h] | 717,263.71 |
| MS-SWGRDEL |  | 20kV switchgear delivered to site | milestone | 0d | 2026-11-23 | 2026-11-23 | PR-SWGRFAB | 294d |  |  |  |
| PR-SWGRINSTALL |  | 20kV ring main switchboard - install and terminate (14 panels) |  | 15d | 2026-11-23 | 2026-12-11 | MS-SWGRDEL, E-ENVDONE | 346d |  | HV electrical [720 h] | 1,445,856.75 |
| MS-GENDEL |  | Generators delivered to site | milestone | 0d | 2026-12-07 | 2026-12-07 | PR-GENFAB | 276d |  |  |  |
| PR-GENINSTALL |  | Standby generators (8 nr) - position, terminate and commission acoustic enclosures |  | 25d | 2026-12-07 | 2027-01-14 | MS-GENDEL, E-ENVDONE | 272d |  | Generator install crew [1600 h] | 8,477,195.82 |
| PR-DCIMCORE |  | DCIM platform - head-end and licensing |  | 12d | 2026-12-14 | 2026-12-31 | PR-BMSCORE | 306d |  | Controls [192 h] | 273,966.88 |
| MS-DRYCOOLDEL |  | Dry coolers delivered to site | milestone | 0d | 2026-12-28 | 2026-12-28 | PR-DRYCOOLFAB | 193d |  |  |  |
| PR-DRYCOOLINSTALL |  | Dry coolers / adiabatic units (10 nr) - position, winter-protection install |  | 12d | 2026-12-28 | 2027-01-14 | MS-DRYCOOLDEL, E-SUBDONE | 214d |  | Mechanical install [480 h] | 3,331,052.82 |
| H1-MS-BUSWAYDEL |  | Overhead busway delivered to site -- H1 batch | milestone | 0d | 2027-01-05 | 2027-01-05 | MS-BUSWAYDEL | 293d |  |  |  |
| MS-BUSWAYDEL |  | Overhead busway delivered to site | milestone | 0d | 2027-01-05 | 2027-01-05 | PR-BUSWAYFAB | 185d |  |  |  |
| H1-MS-BATTDEL |  | Battery systems delivered to site -- H1 batch | milestone | 0d | 2027-01-13 | 2027-01-13 | MS-BATTDEL | 278d |  |  |  |
| MS-BATTDEL |  | Battery systems delivered to site | milestone | 0d | 2027-01-13 | 2027-01-13 | PR-BATTFAB | 177d |  |  |  |
| MS-TXDEL |  | HV transformers delivered to site | milestone | 0d | 2027-01-14 | 2027-01-14 | PR-TXFAB | 272d |  |  |  |
| PR-CHWHEAD |  | Chilled water pipework -- plant-room header & primary loop |  | 15d | 2027-01-14 | 2027-02-03 | PR-CHILLERINSTALL, PR-DRYCOOLINSTALL | 212d |  | Mechanical pipefitters [1440 h] | 531,249.67 |
| PR-GENPARALLEL |  | Generator paralleling, ATS and control system |  | 15d | 2027-01-14 | 2027-02-03 | PR-GENINSTALL | 272d |  | Controls electrical [480 h] | 1,420,037.88 |

| ID | Activity | Type | Duration | Start | Finish | Predecessors | Total float | Constraint | Resources | Cost |
| --- | --- | --- | --- | --- | --- | --- | --- | --- | --- | --- |
| PR-TXINSTALL | HV transformers - offload, position, terminate and site test |  | 15d | 2027-01-14 | 2027-02-03 | MS-TXDEL, E-BEAM | 272d |  | HV electrical [720 h] | 2,538,855.6 |
| PR-WATERTREAT | Water treatment and adiabatic make-up (WUE under 0.25 L/kWh) |  | 12d | 2027-01-14 | 2027-01-29 | PR-DRYCOOLINSTALL | 277d |  | Mechanical install [288 h] | 1,007,062.48 |
| H1-MS-UPSDEL | UPS modules delivered to site (rolling, hall by hall) -- H1 batch | milestone | 0d | 2027-01-18 | 2027-01-18 | MS-UPSDEL | 260d |  |  |  |
| MS-UPSDEL | UPS modules delivered to site (rolling, hall by hall) | milestone | 0d | 2027-01-18 | 2027-01-18 | PR-UPSFAB | 170d |  |  |  |
| PR-BUFFER | Buffer vessels, pressurisation and glycol dosing |  | 10d | 2027-01-20 | 2027-02-02 | PR-CHWHEAD SS+18d | 273d |  | Mechanical install [240 h] | 900,546.25 |
| PR-PUMPS | Primary and secondary pump sets incl. inverters |  | 12d | 2027-01-22 | 2027-02-08 | PR-CHWHEAD SS+24d | 267d |  | Mechanical install [384 h] | 536,841.77 |
| H1-MS-SUPPDEL | Suppression system delivered to site (rolling, hall by hall) -- H1 batch | milestone | 0d | 2027-01-25 | 2027-01-25 | MS-SUPPDEL | 268d |  |  |  |
| MS-SUPPDEL | Suppression system delivered to site (rolling, hall by hall) | milestone | 0d | 2027-01-25 | 2027-01-25 | PR-SUPPFAB | 165d |  |  |  |
| PR-CHWMAIN-W | Chilled water mains -- segment to Hall 1 & Gatehouse (West) |  | 12d | 2027-01-25 | 2027-02-09 | PR-CHWHEAD SS+30d | 213d |  | Mechanical pipefitters [1152 h] | 373,842.36 |
| PR-CHWMAIN-H2 | Chilled water mains -- segment to Hall 2 (Central) |  | 9d | 2027-02-01 | 2027-02-11 | PR-CHWMAIN-W SS+18d | 214d |  | Mechanical pipefitters [864 h] | 295,138.7 |
| PR-110KV | 110kV termination and metering |  | 15d | 2027-02-03 | 2027-02-23 | PR-TXINSTALL | 272d |  | HV electrical [480 h] | 628,259.18 |
| H2-MS-BUSWAYDEL | Overhead busway delivered to site -- H2 batch | milestone | 0d | 2027-02-04 | 2027-02-04 | MS-BUSWAYDEL FS+90d | 263d |  |  |  |
| H1-MS-CRAHDEL | CRAH units delivered to site (rolling, hall by hall) -- H1 batch | milestone | 0d | 2027-02-08 | 2027-02-08 | MS-CRAHDEL | 239d |  |  |  |
| MS-CRAHDEL | CRAH units delivered to site (rolling, hall by hall) | milestone | 0d | 2027-02-08 | 2027-02-08 | PR-CRAHFAB | 149d |  |  |  |
| MS-PRIMARYDONE | Primary MEP infrastructure (HV, generation, primary cooling plant) complete -- excludes waste-heat recovery, which is a separate Employer obligation on its own heating-season-gated programme (see MS-DHREADY) | milestone | 0d | 2027-02-08 | 2027-02-08 | PR-GENPARALLEL, PR-FUEL, PR-CHWHEAD, PR-PUMPS, PR-BUFFER, PR-WATERTREAT, PR-VENT, PR-EARTHING, PR-BMSCORE, PR-DCIMCORE, PR-CCTVCORE, PR-MEETME | 267d |  |  |  |
| PR-CHWMAIN-H3 | Chilled water mains -- segment to Hall 3 (Central) |  | 9d | 2027-02-08 | 2027-02-18 | PR-CHWMAIN-H2 SS+18d | 211d |  | Mechanical pipefitters [864 h] | 295,138.7 |
| MS-BMSHWDEL | BMS/DCIM hardware delivered to site | milestone | 0d | 2027-02-11 | 2027-02-11 | PR-BMSHWFAB | 244d |  |  |  |
| H2-MS-BATTDEL | Battery systems delivered to site -- H2 batch | milestone | 0d | 2027-02-12 | 2027-02-12 | MS-BATTDEL FS+90d | 248d |  |  |  |
| H2-MS-UPSDEL | UPS modules delivered to site (rolling, hall by hall) -- H2 batch | milestone | 0d | 2027-02-17 | 2027-02-17 | MS-UPSDEL FS+90d | 230d |  |  |  |
| PR-CHWMAIN-H4A | Chilled water mains -- segment to Hall 4 & Admin/NOC (East) |  | 20d | 2027-02-22 | 2027-03-19 | PR-CHWMAIN-H3 SS+42d | 213d |  | Mechanical pipefitters [1920 h] | 629,629.24 |
| H2-MS-SUPPDEL | Suppression system delivered to site (rolling, hall by hall) -- H2 batch | milestone | 0d | 2027-02-24 | 2027-02-24 | MS-SUPPDEL FS+90d | 238d |  |  |  |
| H3-MS-BUSWAYDEL | Overhead busway delivered to site -- H3 batch | milestone | 0d | 2027-03-08 | 2027-03-08 | MS-BUSWAYDEL FS+180d | 231d |  |  |  |
| H2-MS-CRAHDEL | CRAH units delivered to site (rolling, hall by hall) -- H2 batch | milestone | 0d | 2027-03-10 | 2027-03-10 | MS-CRAHDEL FS+90d | 209d |  |  |  |
| MS-GRIDENERG | Grid Stage-1 energisation, 110/20kV, 6.5 MVA (DNO; earliest per PDC-GC-001 = 2027-03-12) [CONSTRAINT: start on/after 2027-03-12 - BOS risk R-01] | milestone | 0d | 2027-03-12 | 2027-03-12 | PR-TXINSTALL, PR-110KV, PR-SWGRINSTALL, MS-PROTOK | 255d | start on 2027-03-12 |  |  |
| H3-MS-BATTDEL | Battery systems delivered to site -- H3 batch | milestone | 0d | 2027-03-15 | 2027-03-15 | MS-BATTDEL FS+180d | 217d |  |  |  |
| H3-MS-UPSDEL | UPS modules delivered to site (rolling, hall by hall) -- H3 batch | milestone | 0d | 2027-03-19 | 2027-03-19 | MS-UPSDEL FS+180d | 200d |  |  |  |
| H3-MS-SUPPDEL | Suppression system delivered to site (rolling, hall by hall) -- H3 batch | milestone | 0d | 2027-03-30 | 2027-03-30 | MS-SUPPDEL FS+180d | 204d |  |  |  |
| H4-MS-BUSWAYDEL | Overhead busway delivered to site -- H4 batch | milestone | 0d | 2027-04-05 | 2027-04-05 | MS-BUSWAYDEL FS+270d | 203d |  |  |  |
| H3-MS-CRAHDEL | CRAH units delivered to site (rolling, hall by hall) -- H3 batch | milestone | 0d | 2027-04-09 | 2027-04-09 | MS-CRAHDEL FS+180d | 179d |  |  |  |
| H4-MS-BATTDEL | Battery systems delivered to site -- H4 batch | milestone | 0d | 2027-04-13 | 2027-04-13 | MS-BATTDEL FS+270d | 188d |  |  |  |
| H4-MS-UPSDEL | UPS modules delivered to site (rolling, hall by hall) -- H4 batch | milestone | 0d | 2027-04-19 | 2027-04-19 | MS-UPSDEL FS+270d | 169d |  |  |  |
| H4-MS-SUPPDEL | Suppression system delivered to site (rolling, hall by hall) -- H4 batch | milestone | 0d | 2027-04-26 | 2027-04-26 | MS-SUPPDEL FS+270d | 177d |  |  |  |
| MS-WHRDEL | Waste-heat recovery plant delivered to site | milestone | 0d | 2027-04-29 | 2027-04-29 | PR-WHRFAB | 216d |  |  |  |
| PR-WHRINSTALL | Waste-heat recovery plant - position and connect |  | 20d | 2027-04-29 | 2027-05-27 | MS-WHRDEL, E-ENVDONE | 217d |  | Mechanical install [960 h] | 4,221,915.78 |
| H4-MS-CRAHDEL | CRAH units delivered to site (rolling, hall by hall) -- H4 batch | milestone | 0d | 2027-05-10 | 2027-05-10 | MS-CRAHDEL FS+270d | 148d |  |  |  |
| PR-WHRPIPE | Heat recovery pipework to site boundary chamber (260 m) |  | 10d | 2027-05-27 | 2027-06-09 | PR-WHRINSTALL, PR-DHCHAMBER | 218d |  | Mechanical pipefitters [320 h] | 181,271.24 |
| MS-DHREADY | Waste-heat recovery plant & boundary chamber ready for witnessed test | milestone | 0d | 2027-06-09 | 2027-06-09 | PR-WHRPIPE | 218d |  |  |  |
| DH-TEST | District heating -- 72h continuous witnessed delivery test, >=4MWth at >=70C (PDC-DH-001; heating season Oct-Apr only; needs >=40% of 10MW IT load online) |  | 5d | 2027-10-01 | 2027-10-07 | MS-DHREADY, MS-TAKEOVER-S2 | 104d | start on 2027-10-01 |  |  |
| MS-DHDELIVERED | District heating waste-heat delivery obligation discharged (target: boundary works by 2027-08-31; test within Oct 2027-Apr 2028 heating season) | milestone | 0d | 2027-10-07 | 2027-10-07 | DH-TEST | 104d |  |  |  |

| ID | WBS | Activity | Type | Duration | Start | Finish | Predecessors | Total float | Resources | Cost |
| --- | --- | --- | --- | --- | --- | --- | --- | --- | --- | --- |
|  | 14 | **Hall 1 MEP Fit-out, ELV/Fire/BMS & Finishes** |  |  | 2026-10-27 | 2027-03-08 |  |  |  |  |
| H1-FLOORFIN |  | Hall 1: data hall floor finish, anti-static sealed screed (1,250 m2) |  | 6d | 2026-10-27 | 2026-11-03 | W-ENVDONE | 342d | Finishes gang [240 h] | 127,600 |
| H1-PARTITIONS |  | Hall 1: internal partitions & fire-rated boarding |  | 16d | 2026-10-27 | 2026-11-17 | W-ENVDONE | 332d | Partitions gang [640 h] | 247,808 |
| H1-CONTAINHALL |  | Hall 1: cold-aisle containment framework & blanking (1,250 m2) |  | 8d | 2026-11-03 | 2026-11-12 | H1-FLOORFIN | 342d | Containment fitters [256 h] | 211,200 |
| H1-ASPIRATE |  | Hall 1: aspirating smoke detection to white space (1,250 m2) |  | 3d | 2026-11-12 | 2026-11-16 | H1-CONTAINHALL | 351d | Fire systems [72 h] | 49,228.42 |
| H1-ADDRESSABLE |  | Hall 1: addressable fire detection to remaining areas |  | 6d | 2026-11-17 | 2026-11-24 | H1-PARTITIONS | 343d | Fire systems [144 h] | 56,634.09 |
| H1-PLANTFIN |  | Hall 1: floor & wall finishes to plant rooms |  | 7d | 2026-11-17 | 2026-11-25 | H1-PARTITIONS | 342d | Finishes gang [168 h] | 106,392 |
| H1-SPRINKLER |  | Hall 1: sprinkler installation & dry risers to ancillary areas |  | 6d | 2026-11-17 | 2026-11-24 | H1-PARTITIONS | 343d | Fire systems [144 h] | 68,769.97 |
| H1-SUBST |  | Hall 1: hall substation 20/0.4kV - install & terminate |  | 10d | 2026-11-23 | 2026-12-04 | W-ENVDONE, MS-SWGRDEL | 294d | HV/LV electrical [400 h] | 288,310.72 |
| H1-CONTELEC |  | Hall 1: containment, cabling, small power & lighting |  | 18d | 2026-12-04 | 2026-12-31 | H1-SUBST | 306d | LV electrical [720 h] | 602,440.31 |
| H1-LVSWBD |  | Hall 1: LV main switchboards & distribution (2 nr) |  | 8d | 2026-12-04 | 2026-12-15 | H1-SUBST | 294d | LV electrical [256 h] | 318,432.74 |
| H1-ACCESS |  | Hall 1: access control (5 layers) - field devices |  | 9d | 2026-12-07 | 2026-12-17 | H1-PARTITIONS, PR-CCTVCORE | 314d | Security systems [144 h] | 92,463.82 |
| H1-METERING |  | Hall 1: energy metering per feed |  | 5d | 2026-12-15 | 2026-12-21 | H1-LVSWBD | 316d | LV electrical [80 h] | 112,957.56 |
| H1-CCTVHALL |  | Hall 1: CCTV - field devices |  | 5d | 2026-12-17 | 2026-12-23 | H1-ACCESS | 314d | Security systems [80 h] | 59,930.26 |
| H1-UPSINSTALL |  | Hall 1: UPS modules (4 nr, 1000kVA, N+1) - install & terminate |  | 10d | 2027-01-18 | 2027-01-29 | H1-LVSWBD, H1-MS-UPSDEL | 262d | UPS specialist [320 h] | 800,384.99 |
| H1-SUPPRESS |  | Hall 1: gaseous/water-mist suppression to data hall |  | 10d | 2027-01-25 | 2027-02-05 | H1-CONTAINHALL, H1-MS-SUPPDEL | 270d | Fire systems [240 h] | 329,616.4 |
| H1-BATTINSTALL |  | Hall 1: battery system, 5 min autonomy at full load |  | 6d | 2027-01-29 | 2027-02-05 | H1-UPSINSTALL, H1-MS-BATTDEL | 262d | UPS specialist [144 h] | 284,007.58 |
| H1-BUSWAY |  | Hall 1: overhead busway to rack PDUs (240 m) |  | 7d | 2027-02-05 | 2027-02-15 | H1-BATTINSTALL, H1-MS-BUSWAYDEL | 260d | LV electrical [224 h] | 160,077 |
| H1-CRAH |  | Hall 1: CRAH units (7 nr, N+1) - position & connect |  | 7d | 2027-02-08 | 2027-02-16 | W-ENVDONE, H1-MS-CRAHDEL | 239d | Mechanical install [280 h] | 630,382.38 |
| H1-BMSFIELD |  | Hall 1: BMS field devices & integration |  | 10d | 2027-02-16 | 2027-03-01 | H1-CRAH, PR-BMSCORE, MS-BMSHWDEL | 239d | Controls [240 h] | 126,281.61 |
| H1-CHWBRANCH |  | Hall 1: chilled-water branch pipework, valves & instrumentation |  | 12d | 2027-02-16 | 2027-03-03 | H1-CRAH, PR-CHWMAIN-W | 244d | Mechanical pipefitters [384 h] | 895,704.61 |
| H1-DCIMFIELD |  | Hall 1: DCIM field devices - power, cooling & environmental reporting |  | 6d | 2027-03-01 | 2027-03-08 | H1-BMSFIELD | 239d | Controls [96 h] | 68,491.72 |
| H1-FITOUTDONE |  | Hall 1: MEP fit-out, ELV/fire/BMS and architectural finishes complete | milestone | 0d | 2027-03-08 | 2027-03-08 | H1-CONTELEC, H1-BUSWAY, H1-METERING, H1-CHWBRANCH, H1-ASPIRATE, H1-ADDRESSABLE, H1-SUPPRESS, H1-SPRINKLER, H1-CCTVHALL, H1-DCIMFIELD, H1-PLANTFIN | 239d |  |  |
|  | 15 | **Hall 2 MEP Fit-out, ELV/Fire/BMS & Finishes** |  |  | 2027-01-07 | 2027-04-09 |  |  |  |  |
| H2-FLOORFIN |  | Hall 2: data hall floor finish, anti-static sealed screed (1,250 m2) |  | 6d | 2027-01-07 | 2027-01-14 | H2-ENVDONE | 270d | Finishes gang [240 h] | 127,600 |
| H2-PARTITIONS |  | Hall 2: internal partitions & fire-rated boarding |  | 16d | 2027-01-07 | 2027-01-28 | H2-ENVDONE | 260d | Partitions gang [640 h] | 247,808 |
| H2-SUBST |  | Hall 2: hall substation 20/0.4kV - install & terminate |  | 10d | 2027-01-07 | 2027-01-20 | H2-ENVDONE, MS-SWGRDEL | 247d | HV/LV electrical [400 h] | 288,310.72 |
| H2-CONTAINHALL |  | Hall 2: cold-aisle containment framework & blanking (1,250 m2) |  | 8d | 2027-01-14 | 2027-01-25 | H2-FLOORFIN | 268d | Containment fitters [256 h] | 211,200 |
| H2-CONTELEC |  | Hall 2: containment, cabling, small power & lighting |  | 18d | 2027-01-20 | 2027-02-12 | H2-SUBST | 263d | LV electrical [720 h] | 602,440.31 |
| H2-LVSWBD |  | Hall 2: LV main switchboards & distribution (2 nr) |  | 8d | 2027-01-20 | 2027-01-29 | H2-SUBST | 249d | LV electrical [256 h] | 318,432.74 |
| H2-ASPIRATE |  | Hall 2: aspirating smoke detection to white space (1,250 m2) |  | 3d | 2027-01-25 | 2027-01-27 | H2-CONTAINHALL | 279d | Fire systems [72 h] | 49,228.42 |
| H2-ACCESS |  | Hall 2: access control (5 layers) - field devices |  | 9d | 2027-01-28 | 2027-02-09 | H2-PARTITIONS, PR-CCTVCORE | 260d | Security systems [144 h] | 92,463.82 |
| H2-ADDRESSABLE |  | Hall 2: addressable fire detection to remaining areas |  | 6d | 2027-01-28 | 2027-02-04 | H2-PARTITIONS | 271d | Fire systems [144 h] | 56,634.09 |
| H2-PLANTFIN |  | Hall 2: floor & wall finishes to plant rooms |  | 7d | 2027-01-28 | 2027-02-05 | H2-PARTITIONS | 270d | Finishes gang [168 h] | 106,392 |
| H2-SPRINKLER |  | Hall 2: sprinkler installation & dry risers to ancillary areas |  | 6d | 2027-01-28 | 2027-02-04 | H2-PARTITIONS | 271d | Fire systems [144 h] | 68,769.97 |
| H2-METERING |  | Hall 2: energy metering per feed |  | 5d | 2027-01-29 | 2027-02-04 | H2-LVSWBD | 271d | LV electrical [80 h] | 112,957.56 |
| H2-CCTVHALL |  | Hall 2: CCTV - field devices |  | 5d | 2027-02-09 | 2027-02-15 | H2-ACCESS | 260d | Security systems [80 h] | 59,930.26 |
| H2-UPSINSTALL |  | Hall 2: UPS modules (4 nr, 1000kVA, N+1) - install & terminate |  | 10d | 2027-02-17 | 2027-03-02 | H2-LVSWBD, H2-MS-UPSDEL | 230d | UPS specialist [320 h] | 800,384.99 |
| H2-SUPPRESS |  | Hall 2: gaseous/water-mist suppression to data hall |  | 10d | 2027-02-24 | 2027-03-09 | H2-CONTAINHALL, H2-MS-SUPPDEL | 238d | Fire systems [240 h] | 329,616.4 |
| H2-BATTINSTALL |  | Hall 2: battery system, 5 min autonomy at full load |  | 6d | 2027-03-02 | 2027-03-09 | H2-UPSINSTALL, H2-MS-BATTDEL | 230d | UPS specialist [144 h] | 284,007.58 |
| H2-BUSWAY |  | Hall 2: overhead busway to rack PDUs (240 m) |  | 7d | 2027-03-09 | 2027-03-17 | H2-BATTINSTALL, H2-MS-BUSWAYDEL | 230d | LV electrical [224 h] | 160,077 |
| H2-CRAH |  | Hall 2: CRAH units (7 nr, N+1) - position & connect |  | 7d | 2027-03-10 | 2027-03-18 | H2-ENVDONE, H2-MS-CRAHDEL | 209d | Mechanical install [280 h] | 630,382.38 |
| H2-BMSFIELD |  | Hall 2: BMS field devices & integration |  | 10d | 2027-03-18 | 2027-04-02 | H2-CRAH, PR-BMSCORE, MS-BMSHWDEL | 207d | Controls [240 h] | 126,281.61 |
| H2-CHWBRANCH |  | Hall 2: chilled-water branch pipework, valves & instrumentation |  | 12d | 2027-03-18 | 2027-04-06 | H2-CRAH, PR-CHWMAIN-H2 | 210d | Mechanical pipefitters [384 h] | 895,704.61 |
| H2-DCIMFIELD |  | Hall 2: DCIM field devices - power, cooling & environmental reporting |  | 6d | 2027-04-02 | 2027-04-09 | H2-BMSFIELD | 207d | Controls [96 h] | 68,491.72 |
| H2-FITOUTDONE |  | Hall 2: MEP fit-out, ELV/fire/BMS and architectural finishes complete | milestone | 0d | 2027-04-09 | 2027-04-09 | H2-CONTELEC, H2-BUSWAY, H2-METERING, H2-CHWBRANCH, H2-ASPIRATE, H2-ADDRESSABLE, H2-SUPPRESS, H2-SPRINKLER, H2-CCTVHALL, H2-DCIMFIELD, H2-PLANTFIN | 207d |  |  |

| ID | WBS | Activity | Type | Duration | Start | Finish | Predecessors | Total float | Resources | Cost |
| --- | --- | --- | --- | --- | --- | --- | --- | --- | --- | --- |
|  | 16 | **Hall 3 MEP Fit-out, ELV/Fire/BMS & Finishes** |  |  | 2027-03-16 | 2027-05-10 |  |  |  |  |
| H3-FLOORFIN |  | Hall 3: data hall floor finish, anti-static sealed screed (1,250 m2) |  | 6d | 2027-03-16 | 2027-03-23 | H3-ENVDONE | 202d | Finishes gang [240 h] | 127,600 |
| H3-PARTITIONS |  | Hall 3: internal partitions & fire-rated boarding |  | 16d | 2027-03-16 | 2027-04-08 | H3-ENVDONE | 190d | Partitions gang [640 h] | 247,808 |
| H3-SUBST |  | Hall 3: hall substation 20/0.4kV - install & terminate |  | 10d | 2027-03-16 | 2027-03-31 | H3-ENVDONE, MS-SWGRDEL | 177d | HV/LV electrical [400 h] | 288,310.72 |
| H3-CONTAINHALL |  | Hall 3: cold-aisle containment framework & blanking (1,250 m2) |  | 8d | 2027-03-23 | 2027-04-05 | H3-FLOORFIN | 198d | Containment fitters [256 h] | 211,200 |
| H3-CONTELEC |  | Hall 3: containment, cabling, small power & lighting |  | 18d | 2027-03-31 | 2027-04-23 | H3-SUBST | 193d | LV electrical [720 h] | 602,440.31 |
| H3-LVSWBD |  | Hall 3: LV main switchboards & distribution (2 nr) |  | 8d | 2027-03-31 | 2027-04-09 | H3-SUBST | 179d | LV electrical [256 h] | 318,432.74 |
| H3-ASPIRATE |  | Hall 3: aspirating smoke detection to white space (1,250 m2) |  | 3d | 2027-04-05 | 2027-04-07 | H3-CONTAINHALL | 209d | Fire systems [72 h] | 49,228.42 |
| H3-SUPPRESS |  | Hall 3: gaseous/water-mist suppression to data hall |  | 10d | 2027-04-05 | 2027-04-16 | H3-CONTAINHALL, H3-MS-SUPPDEL | 200d | Fire systems [240 h] | 329,616.4 |
| H3-ACCESS |  | Hall 3: access control (5 layers) - field devices |  | 9d | 2027-04-08 | 2027-04-20 | H3-PARTITIONS, PR-CCTVCORE | 190d | Security systems [144 h] | 92,463.82 |
| H3-ADDRESSABLE |  | Hall 3: addressable fire detection to remaining areas |  | 6d | 2027-04-08 | 2027-04-15 | H3-PARTITIONS | 201d | Fire systems [144 h] | 56,634.09 |
| H3-PLANTFIN |  | Hall 3: floor & wall finishes to plant rooms |  | 7d | 2027-04-08 | 2027-04-16 | H3-PARTITIONS | 200d | Finishes gang [168 h] | 106,392 |
| H3-SPRINKLER |  | Hall 3: sprinkler installation & dry risers to ancillary areas |  | 6d | 2027-04-08 | 2027-04-15 | H3-PARTITIONS | 201d | Fire systems [144 h] | 68,769.97 |
| H3-CRAH |  | Hall 3: CRAH units (7 nr, N+1) - position & connect |  | 7d | 2027-04-09 | 2027-04-19 | H3-ENVDONE, H3-MS-CRAHDEL | 177d | Mechanical install [280 h] | 630,382.38 |
| H3-METERING |  | Hall 3: energy metering per feed |  | 5d | 2027-04-09 | 2027-04-15 | H3-LVSWBD | 201d | LV electrical [80 h] | 112,957.56 |
| H3-UPSINSTALL |  | Hall 3: UPS modules (4 nr, 1000kVA, N+1) - install & terminate |  | 10d | 2027-04-09 | 2027-04-22 | H3-LVSWBD, H3-MS-UPSDEL | 179d | UPS specialist [320 h] | 800,384.99 |
| H3-BMSFIELD |  | Hall 3: BMS field devices & integration |  | 10d | 2027-04-19 | 2027-04-30 | H3-CRAH, PR-BMSCORE, MS-BMSHWDEL | 179d | Controls [240 h] | 126,281.61 |
| H3-CHWBRANCH |  | Hall 3: chilled-water branch pipework, valves & instrumentation |  | 12d | 2027-04-19 | 2027-05-04 | H3-CRAH, PR-CHWMAIN-H3 | 182d | Mechanical pipefitters [384 h] | 895,704.61 |
| H3-CCTVHALL |  | Hall 3: CCTV - field devices |  | 5d | 2027-04-20 | 2027-04-26 | H3-ACCESS | 190d | Security systems [80 h] | 59,930.26 |
| H3-BATTINSTALL |  | Hall 3: battery system, 5 min autonomy at full load |  | 6d | 2027-04-22 | 2027-04-29 | H3-UPSINSTALL, H3-MS-BATTDEL | 179d | UPS specialist [144 h] | 284,007.58 |
| H3-BUSWAY |  | Hall 3: overhead busway to rack PDUs (240 m) |  | 7d | 2027-04-29 | 2027-05-10 | H3-BATTINSTALL, H3-MS-BUSWAYDEL | 176d | LV electrical [224 h] | 160,077 |
| H3-DCIMFIELD |  | Hall 3: DCIM field devices - power, cooling & environmental reporting |  | 6d | 2027-04-30 | 2027-05-10 | H3-BMSFIELD | 176d | Controls [96 h] | 68,491.72 |
| H3-FITOUTDONE |  | Hall 3: MEP fit-out, ELV/fire/BMS and architectural finishes complete | milestone | 0d | 2027-05-10 | 2027-05-10 | H3-CONTELEC, H3-BUSWAY, H3-METERING, H3-CHWBRANCH, H3-ASPIRATE, H3-ADDRESSABLE, H3-SUPPRESS, H3-SPRINKLER, H3-CCTVHALL, H3-DCIMFIELD, H3-PLANTFIN | 176d |  |  |
|  | 17 | **Hall 4 & Admin/NOC MEP Fit-out, ELV/Fire/BMS & Finishes** |  |  | 2027-08-19 | 2027-11-02 |  |  |  |  |
| H4-CRAH |  | Hall 4 & Admin/NOC: CRAH units (7 nr, N+1) - position & connect |  | 7d | 2027-08-19 | 2027-08-27 | H4A-ENVDONE, H4-MS-CRAHDEL | 47d | Mechanical install [280 h] | 630,382.38 |
| H4-FLOORFIN |  | Hall 4 & Admin/NOC: data hall floor finish, anti-static sealed screed (1,250 m2) |  | 6d | 2027-08-19 | 2027-08-26 | H4A-ENVDONE | 46d | Finishes gang [240 h] | 127,600 |
| H4-PARTITIONS |  | Hall 4 & Admin/NOC: internal partitions & fire-rated boarding |  | 16d | 2027-08-19 | 2027-09-09 | H4A-ENVDONE | 0d | Partitions gang [640 h] | 247,808 |
| H4-SUBST |  | Hall 4 & Admin/NOC: hall substation 20/0.4kV - install & terminate |  | 10d | 2027-08-19 | 2027-09-01 | H4A-ENVDONE, MS-SWGRDEL | 23d | HV/LV electrical [400 h] | 288,310.72 |
| H4-CONTAINHALL |  | Hall 4 & Admin/NOC: cold-aisle containment framework & blanking (1,250 m2) |  | 8d | 2027-08-26 | 2027-09-06 | H4-FLOORFIN | 44d | Containment fitters [256 h] | 211,200 |
| H4-BMSFIELD |  | Hall 4 & Admin/NOC: BMS field devices & integration |  | 10d | 2027-08-27 | 2027-09-09 | H4-CRAH, PR-BMSCORE, MS-BMSHWDEL | 47d | Controls [240 h] | 126,281.61 |
| H4-CHWBRANCH |  | Hall 4 & Admin/NOC: chilled-water branch pipework, valves & instrumentation |  | 12d | 2027-08-27 | 2027-09-13 | H4-CRAH, PR-CHWMAIN-H4A | 50d | Mechanical pipefitters [384 h] | 895,704.61 |
| H4-CONTELEC |  | Hall 4 & Admin/NOC: containment, cabling, small power & lighting |  | 18d | 2027-09-01 | 2027-09-24 | H4-SUBST | 39d | LV electrical [720 h] | 602,440.31 |
| H4-LVSWBD |  | Hall 4 & Admin/NOC: LV main switchboards & distribution (2 nr) |  | 8d | 2027-09-01 | 2027-09-10 | H4-SUBST | 25d | LV electrical [256 h] | 318,432.74 |
| H4-ASPIRATE |  | Hall 4 & Admin/NOC: aspirating smoke detection to white space (1,250 m2) |  | 3d | 2027-09-06 | 2027-09-08 | H4-CONTAINHALL | 55d | Fire systems [72 h] | 49,228.42 |
| H4-SUPPRESS |  | Hall 4 & Admin/NOC: gaseous/water-mist suppression to data hall |  | 10d | 2027-09-06 | 2027-09-17 | H4-CONTAINHALL, H4-MS-SUPPDEL | 46d | Fire systems [240 h] | 329,616.4 |
| ADMIN-FITOUT |  | Admin/NOC block fit-out incl. joinery & sanitaryware |  | 30d | 2027-09-09 | 2027-10-20 | H4-PARTITIONS | 0d | Fit-out gang [1920 h] | 1,267,200 |
| H4-ACCESS |  | Hall 4 & Admin/NOC: access control (5 layers) - field devices |  | 9d | 2027-09-09 | 2027-09-21 | H4-PARTITIONS, PR-CCTVCORE | 36d | Security systems [144 h] | 92,463.82 |
| H4-ADDRESSABLE |  | Hall 4 & Admin/NOC: addressable fire detection to remaining areas |  | 6d | 2027-09-09 | 2027-09-16 | H4-PARTITIONS | 47d | Fire systems [144 h] | 56,634.09 |
| H4-DCIMFIELD |  | Hall 4 & Admin/NOC: DCIM field devices - power, cooling & environmental reporting |  | 6d | 2027-09-09 | 2027-09-16 | H4-BMSFIELD | 47d | Controls [96 h] | 68,491.72 |
| H4-PLANTFIN |  | Hall 4 & Admin/NOC: floor & wall finishes to plant rooms |  | 7d | 2027-09-09 | 2027-09-17 | H4-PARTITIONS | 46d | Finishes gang [168 h] | 106,392 |
| H4-SPRINKLER |  | Hall 4 & Admin/NOC: sprinkler installation & dry risers to ancillary areas |  | 6d | 2027-09-09 | 2027-09-16 | H4-PARTITIONS | 47d | Fire systems [144 h] | 68,769.97 |
| H4-METERING |  | Hall 4 & Admin/NOC: energy metering per feed |  | 5d | 2027-09-10 | 2027-09-16 | H4-LVSWBD | 47d | LV electrical [80 h] | 112,957.56 |
| H4-UPSINSTALL |  | Hall 4 & Admin/NOC: UPS modules (4 nr, 1000kVA, N+1) - install & terminate |  | 10d | 2027-09-10 | 2027-09-23 | H4-LVSWBD, H4-MS-UPSDEL | 25d | UPS specialist [320 h] | 800,384.99 |
| H4-CCTVHALL |  | Hall 4 & Admin/NOC: CCTV - field devices |  | 5d | 2027-09-21 | 2027-09-27 | H4-ACCESS | 36d | Security systems [80 h] | 59,930.26 |
| H4-BATTINSTALL |  | Hall 4 & Admin/NOC: battery system, 5 min autonomy at full load |  | 6d | 2027-09-23 | 2027-09-30 | H4-UPSINSTALL, H4-MS-BATTDEL | 25d | UPS specialist [144 h] | 284,007.58 |
| H4-BUSWAY |  | Hall 4 & Admin/NOC: overhead busway to rack PDUs (240 m) |  | 7d | 2027-09-30 | 2027-10-08 | H4-BATTINSTALL, H4-MS-BUSWAYDEL | 25d | LV electrical [224 h] | 160,077 |
| ADMIN-SIGNAGE |  | Signage, wayfinding & hall labelling |  | 10d | 2027-10-20 | 2027-11-02 | ADMIN-FITOUT | 0d | Fit-out gang [160 h] | 580,800.01 |
| H4-FITOUTDONE |  | Hall 4 & Admin/NOC: MEP fit-out, ELV/fire/BMS and architectural finishes complete | milestone | 0d | 2027-11-02 | 2027-11-02 | H4-CONTELEC, H4-BUSWAY, H4-METERING, H4-CHWBRANCH, H4-ASPIRATE, H4-ADDRESSABLE, H4-SUPPRESS, H4-SPRINKLER, H4-CCTVHALL, H4-DCIMFIELD, H4-PLANTFIN, ADMIN-SIGNAGE | 0d |  |  |

| ID | WBS | Activity | Type | Duration | Start | Finish | Predecessors | Total float | Resources | Cost |
| --- | --- | --- | --- | --- | --- | --- | --- | --- | --- | --- |
|  | 18 | **External Works, Security & Fibre Entry** |  |  | 2026-03-23 | 2026-11-16 |  |  |  |  |
| EXT-FENCE1 |  | Perimeter fencing, detection & vehicle gates (phase 1) |  | 6d | 2026-03-23 | 2026-03-30 | MS-COMM FS+60d | 582d | Fencing gang [192 h] | 292,169.29 |
| EXT-FIBRE |  | Two diverse fibre entry routes & ducts |  | 21d | 2026-08-28 | 2026-09-25 | W-SUBDONE | 403d | Civils/ICT gang [672 h] | 307,807.92 |
| EXT-ROADS |  | Roads, hardstanding & service yard (phase 1, site access) |  | 14d | 2026-08-28 | 2026-09-16 | W-SUBDONE | 392d | Civils gang [672 h] | 451,782.59 |
| EXT-UTIL |  | Foul, water & utility connections |  | 15d | 2026-08-28 | 2026-09-17 | W-SUBDONE | 411d | Civils gang [480 h] | 449,182.06 |
| EXT-STORM1 |  | Stormwater attenuation, oil separators & discharge control (phase 1) |  | 20d | 2026-09-07 | 2026-10-02 | W-SUBDONE, E-SUBDONE | 396d | Civils gang [800 h] | 439,725.6 |
| EXT-GATEHOUSE |  | Gatehouse fit-out & weighbridge |  | 15d | 2026-10-27 | 2026-11-16 | EXT-ROADS, W-ENVDONE | 351d | Fit-out gang [480 h] | 283,693.93 |
| MS-EXTS1DONE |  | External works required for Section 1 (site access & gatehouse) complete | milestone | 0d | 2026-11-16 | 2026-11-16 | EXT-GATEHOUSE, EXT-FENCE1, EXT-STORM1, EXT-UTIL, EXT-FIBRE | 351d |  |  |
|  | 19 | **Landscaping & External Works Close-out** |  |  | 2027-04-19 | 2027-06-03 |  |  |  |  |
| EXT-FENCE2 |  | Perimeter fencing, detection & vehicle gates (phase 2, close-out) |  | 4d | 2027-04-19 | 2027-04-22 | H4A-SUBDONE | 230d | Fencing gang [96 h] | 194,779.53 |
| EXT-ROADS2 |  | Roads, hardstanding & service yard (phase 2) |  | 14d | 2027-04-19 | 2027-05-07 | H4A-SUBDONE | 215d | Civils gang [560 h] | 451,782.59 |
| EXT-STORM2 |  | Stormwater attenuation (phase 2, final tie-in) |  | 10d | 2027-04-19 | 2027-04-30 | H4A-SUBDONE, EXT-STORM1 | 250d | Civils gang [240 h] | 293,150.4 |
| EXT-LANDSCAPE |  | Landscaping & tree replacement (2:1, permit condition) |  | 20d | 2027-05-07 | 2027-06-03 | EXT-ROADS2, EXT-FENCE2 | 216d | Landscaping gang [640 h] | 218,680.74 |
| EXT-LIGHT |  | External lighting & small power |  | 12d | 2027-05-07 | 2027-05-24 | EXT-ROADS2 | 226d | LV electrical [288 h] | 313,245.38 |
| MS-EXTDONE |  | External works, security, fibre & landscaping complete (whole of the Works) | milestone | 0d | 2027-06-03 | 2027-06-03 | EXT-LIGHT, EXT-LANDSCAPE, EXT-STORM2 | 216d |  |  |
|  | 20 | **Commissioning - Section 1** |  |  | 2027-03-08 | 2027-05-04 |  |  |  |  |
| S1-L23 |  | Section 1 (Hall 1 + primary infrastructure + site access/gatehouse): L2/L3 static inspection & component start-up |  | 15d | 2027-03-08 | 2027-03-30 | H1-FITOUTDONE, MS-PRIMARYDONE, PR-L1FAT, MS-EXTS1DONE, PR-LOUVREINSTALL | 237d | Commissioning engineer [480 h] | 96,364.72 |
| S1-L4 |  | Section 1 (Hall 1 + primary infrastructure + site access/gatehouse): L4 integrated systems testing incl. failure-mode demonstrations (utility/chiller/UPS/generator loss) |  | 15d | 2027-03-30 | 2027-04-19 | S1-L23, MS-GRIDENERG, PR-SWGRINSTALL | 238d | Commissioning team [720 h] | 154,183.55 |
| S1-L5 |  | Section 1 (Hall 1 + primary infrastructure + site access/gatehouse): L5 integrated load-bank testing, 24h at full Section load |  | 8d | 2027-04-19 | 2027-04-28 | S1-L4 | 238d | Commissioning team [384 h] | 203,742.55 |
| S1-OCCINSP |  | Section 1 (Hall 1 + primary infrastructure + site access/gatehouse): statutory occupancy inspection (kayttoonottotarkastus, 5 working days notice) |  | 5d | 2027-04-28 | 2027-05-04 | S1-L5 | 239d | Non-labour cost (procurement, plant, statutory fees) [1] | 34,874.85 |
| S1-TENANT |  | Section 1 (Hall 1 + primary infrastructure + site access/gatehouse): Tenant technical acceptance (Anchor Tenant Technical Annex) |  | 5d | 2027-04-28 | 2027-05-04 | S1-L5 | 239d |  |  |
|  | 21 | **Commissioning - Section 2** |  |  | 2027-04-09 | 2027-06-04 |  |  |  |  |
| S2-L23 |  | Section 2 (Hall 2): L2/L3 static inspection & component start-up |  | 15d | 2027-04-09 | 2027-04-29 | H2-FITOUTDONE, MS-PRIMARYDONE, PR-L1FAT | 207d | Commissioning engineer [480 h] | 96,364.72 |
| S2-L4 |  | Section 2 (Hall 2): L4 integrated systems testing incl. failure-mode demonstrations (utility/chiller/UPS/generator loss) |  | 15d | 2027-04-29 | 2027-05-20 | S2-L23, MS-GRIDENERG, PR-SWGRINSTALL | 207d | Commissioning team [720 h] | 154,183.55 |
| S2-L5 |  | Section 2 (Hall 2): L5 integrated load-bank testing, 24h at full Section load |  | 8d | 2027-05-20 | 2027-05-31 | S2-L4 | 205d | Commissioning team [384 h] | 203,742.55 |
| S2-OCCINSP |  | Section 2 (Hall 2): statutory occupancy inspection (kayttoonottotarkastus, 5 working days notice) |  | 5d | 2027-05-31 | 2027-06-04 | S2-L5 | 208d | Non-labour cost (procurement, plant, statutory fees) [1] | 34,874.85 |
| S2-TENANT |  | Section 2 (Hall 2): Tenant technical acceptance (Anchor Tenant Technical Annex) |  | 5d | 2027-05-31 | 2027-06-04 | S2-L5 | 208d |  |  |

| ID | WBS | Activity | Type | Duration | Start | Finish | Predecessors | Total float | Resources | Cost |
| --- | --- | --- | --- | --- | --- | --- | --- | --- | --- | --- |
|  | 22 | **Commissioning - Section 3** |  |  | 2027-05-10 | 2027-07-05 |  |  |  |  |
| S3-L23 |  | Section 3 (Hall 3): L2/L3 static inspection & component start-up |  | 15d | 2027-05-10 | 2027-05-28 | H3-FITOUTDONE, MS-PRIMARYDONE, PR-L1FAT | 178d | Commissioning engineer [480 h] | 96,364.72 |
| S3-L4 |  | Section 3 (Hall 3): L4 integrated systems testing incl. failure-mode demonstrations (utility/chiller/UPS/generator loss) |  | 15d | 2027-05-28 | 2027-06-17 | S3-L23, MS-GRIDENERG, PR-SWGRINSTALL | 179d | Commissioning team [720 h] | 154,183.55 |
| S3-L5 |  | Section 3 (Hall 3): L5 integrated load-bank testing, 24h at full Section load |  | 8d | 2027-06-17 | 2027-06-29 | S3-L4 | 176d | Commissioning team [384 h] | 203,742.55 |
| S3-OCCINSP |  | Section 3 (Hall 3): statutory occupancy inspection (kayttoonottotarkastus, 5 working days notice) |  | 5d | 2027-06-29 | 2027-07-05 | S3-L5 | 177d | Non-labour cost (procurement, plant, statutory fees) [1] | 34,874.85 |
| S3-TENANT |  | Section 3 (Hall 3): Tenant technical acceptance (Anchor Tenant Technical Annex) |  | 5d | 2027-06-29 | 2027-07-05 | S3-L5 | 177d |  |  |
|  | 23 | **Commissioning - Section 4** |  |  | 2027-11-02 | 2027-12-29 |  |  |  |  |
| S4-L23 |  | Section 4 (Hall 4 + Admin/NOC + external works): L2/L3 static inspection & component start-up |  | 15d | 2027-11-02 | 2027-11-22 | H4-FITOUTDONE, MS-PRIMARYDONE, PR-L1FAT | 0d | Commissioning engineer [480 h] | 96,364.72 |
| S4-L4 |  | Section 4 (Hall 4 + Admin/NOC + external works): L4 integrated systems testing incl. failure-mode demonstrations (utility/chiller/UPS/generator loss) |  | 15d | 2027-11-22 | 2027-12-13 | S4-L23, MS-GRIDENERG, PR-SWGRINSTALL | 0d | Commissioning team [720 h] | 154,183.55 |
| S4-L5 |  | Section 4 (Hall 4 + Admin/NOC + external works): L5 integrated load-bank testing, 24h at full Section load |  | 8d | 2027-12-13 | 2027-12-22 | S4-L4 | 0d | Commissioning team [384 h] | 203,742.55 |
| S4-OCCINSP |  | Section 4 (Hall 4 + Admin/NOC + external works): statutory occupancy inspection (kayttoonottotarkastus, 5 working days notice) |  | 5d | 2027-12-22 | 2027-12-29 | S4-L5 | 0d | Non-labour cost (procurement, plant, statutory fees) [1] | 34,874.85 |
| S4-TENANT |  | Section 4 (Hall 4 + Admin/NOC + external works): Tenant technical acceptance (Anchor Tenant Technical Annex) |  | 5d | 2027-12-22 | 2027-12-29 | S4-L5 | 0d |  |  |
|  | 24 | **Sectional Completion Milestones** |  |  | 2027-05-04 | 2027-12-29 |  |  |  |  |
| MS-TAKEOVER-S1 |  | Section 1 (Hall 1 + primary infrastructure + site access/gatehouse): TAKING-OVER (Sectional Completion) | milestone | 0d | 2027-05-04 | 2027-05-04 | S1-OCCINSP, S1-TENANT | 239d |  |  |
| MS-TAKEOVER-S2 |  | Section 2 (Hall 2): TAKING-OVER (Sectional Completion) | milestone | 0d | 2027-06-04 | 2027-06-04 | S2-OCCINSP, S2-TENANT | 208d |  |  |
| MS-TAKEOVER-S3 |  | Section 3 (Hall 3): TAKING-OVER (Sectional Completion) | milestone | 0d | 2027-07-05 | 2027-07-05 | S3-OCCINSP, S3-TENANT | 177d |  |  |
| MS-TAKEOVER-S4 |  | Section 4 (Hall 4 + Admin/NOC + external works): TAKING-OVER (Sectional Completion) | milestone | 0d | 2027-12-29 | 2027-12-29 | S4-OCCINSP, S4-TENANT | 0d |  |  |
|  | 25 | **Close-out (Whole of the Works)** |  |  | 2027-12-29 | 2028-01-19 |  |  |  |  |
| CLOSE-ASBUILT |  | Final as-built model, O&M manuals & statutory certificates - whole of the Works |  | 15d | 2027-12-29 | 2028-01-19 | MS-TAKEOVER-S4, MS-TAKEOVER-S1, MS-TAKEOVER-S2, MS-TAKEOVER-S3, D-ASBLT | 0d | Design/QA [360 h] |  |
| CLOSE-DEMOB |  | Site demobilisation, final clean & handback of welfare facilities |  | 10d | 2027-12-29 | 2028-01-12 | MS-TAKEOVER-S4, MS-EXTDONE | 7d | Site est. [320 h] |  |
| MS-PC |  | Performance Certificate application (whole of the Works) submitted | milestone | 0d | 2028-01-19 | 2028-01-19 | CLOSE-ASBUILT, CLOSE-DEMOB, MS-DHDELIVERED | 0d |  |  |
