# PDC1-BASE

Schedule from Primavera P6, 2026-01-15 to 2028-06-05, data date 2028-06-05, costs in P6 Professional.
Must finish by 2028-06-05

## Resources

| Resource | Group | Notes |
| --- | --- | --- |
| Site Management | labor | Manpower resource (crew) |
| Design Management | labor | Manpower resource (crew) |
| Civil Crew | labor | Manpower resource (crew) |
| Landscaping Crew | labor | Manpower resource (crew) |
| Commissioning Team | labor | Manpower resource (crew) |
| Procurement | labor | Manpower resource (crew) |
| Earthworks Crew | labor | Manpower resource (crew) |
| Surveying Team | labor | Manpower resource (crew) |
| Piling Crew | labor | Manpower resource (crew) |
| Concrete Crew | labor | Manpower resource (crew) |
| Steel & Precast Crew | labor | Manpower resource (crew) |
| Structural Design | labor | Manpower resource (crew) |
| Vendor (Steel Fabricator) | labor | Manpower resource (crew) |
| Vendor (Precast Factory) | labor | Manpower resource (crew) |
| Fire Protection Crew | labor | Manpower resource (crew) |
| Envelope Crew | labor | Manpower resource (crew) |
| Facade Vendor | labor | Manpower resource (crew) |
| Facade Crew | labor | Manpower resource (crew) |
| Logistics | labor | Manpower resource (crew) |
| Plumbing Crew | labor | Manpower resource (crew) |
| MEP Design | labor | Manpower resource (crew) |
| Mechanical Crew | labor | Manpower resource (crew) |
| Electrical Crew | labor | Manpower resource (crew) |
| ICT Crew | labor | Manpower resource (crew) |
| BMS Crew | labor | Manpower resource (crew) |
| Fit-Out Crew | labor | Manpower resource (crew) |
| Interior Design | labor | Manpower resource (crew) |

## Schedule

| ID | WBS | Activity | Type | Duration | Start | Finish | Predecessors | Total float | Free float | Constraint | Resources | Cost | Contract Date |
| --- | --- | --- | --- | --- | --- | --- | --- | --- | --- | --- | --- | --- | --- |
|  | 0.0 | **Project Start & Contract** |  |  | 2026-01-15 | 2026-03-02 |  |  |  |  |  |  |  |
| NB_0001 |  | Contract award / Notice to Proceed (MS) | milestone | 0d | 2026-01-15 | 2026-01-15 |  | -15d | 0d | start on 2026-01-15 | Site Management | 1,685 |  |
| NB_0002 |  | COMMENCEMENT DATE (Cl. 8.1) (MS) | milestone | 0d | 2026-03-02 | 2026-03-02 | NB_0001 FS+32d | 3d | 0d |  | Site Management | 1,685 | 2026-03-02 |
|  | 1.0 | **Project Management, Design & Statutory** |  |  | 2026-01-15 | 2028-01-31 |  |  |  |  |  |  |  |
| NB_1000 |  | Concept design (S1) and design management |  | 25d | 2026-01-15 | 2026-02-19 | NB_0001 | 427d | 0d |  | Design Management [150 h] | 252,778 |  |
| NB_1200 |  | Site establishment — compound, welfare, security |  | 20d | 2026-01-15 | 2026-02-12 | NB_0001 | 571d | 0d |  | Site Management [80 h] | 134,815 |  |
| NB_1210 |  | Temporary works — crane bases and hardstands |  | 15d | 2026-02-12 | 2026-03-05 | NB_1200 | 571d | 0d |  | Site Management [60 h] | 101,111 |  |
| NB_1010 |  | Employer's review — concept design S1 (14 d) |  | 14d | 2026-02-19 | 2026-03-11 | NB_1000 | 427d | 0d |  | Design Management [84 h] | 141,556 |  |
| NB_1020 |  | Detailed design (S2) and multidiscipline coordination |  | 60d | 2026-03-11 | 2026-06-09 | NB_1010 | 427d | 0d |  | Design Management [360 h] | 606,667 |  |
| NB_1100 |  | Building permit — application and grant |  | 55d | 2026-03-11 | 2026-06-02 | NB_1010 | 512d | 0d |  | Design Management [330 h] | 556,111 |  |
| NB_1110 |  | Statutory supervisors approved (MS-04) | milestone | 0d | 2026-03-11 | 2026-03-11 | NB_1010 | 567d | 0d |  | Site Management | 1,685 |  |
| NB_1030 |  | Employer's review — detailed design S2 (21 d) |  | 21d | 2026-06-09 | 2026-07-09 | NB_1020 | 427d | 0d |  | Design Management [126 h] | 212,333 |  |
| NB_1040 |  | Construction-issue design (S3) |  | 45d | 2026-07-09 | 2026-09-10 | NB_1030 | 427d | 0d |  | Design Management [270 h] | 455,000 |  |
| NB_1050 |  | Employer's review — construction design S3 (14 d) |  | 14d | 2026-09-10 | 2026-09-30 | NB_1040 | 427d | 0d |  | Design Management [84 h] | 141,556 |  |
| NB_7006 |  | Employer/tenant fit-out access to Hall 1 (MS-10) | milestone | 0d | 2027-03-02 | 2027-03-02 |  | 322d | 0d | start on 2027-03-02 | Site Management | 1,685 |  |
| NB_7001 |  | DNO Stage 1 capacity release — 6.5 MVA (external) | milestone | 0d | 2027-03-12 | 2027-03-12 |  | -27d | 0d | start on 2027-03-12 | Site Management | 1,685 |  |
| NB_7002 |  | DNO Stage 2 capacity release — 3.5 MVA (external) | milestone | 0d | 2027-06-30 | 2027-06-30 |  | -58d | 0d | start on 2027-06-30 | Site Management | 1,685 |  |
| NB_7005 |  | District-heating boundary works complete (Offtaker, external) | milestone | 0d | 2027-08-31 | 2027-08-31 |  | 44d | 0d | start on 2027-08-31 | Site Management | 1,685 |  |
| NB_7003 |  | DNO Stage 3 capacity release — 3.0 MVA (external) | milestone | 0d | 2027-11-01 | 2027-11-01 |  | -81d | 0d | start on 2027-10-31 | Site Management | 1,685 |  |
| NB_7004 |  | DNO Stage 4 capacity release — 3.0 MVA (external) | milestone | 0d | 2028-01-31 | 2028-01-31 |  | -80d | 0d | start on 2028-01-31 | Site Management | 1,685 |  |
|  | 2.0 | **Procurement** |  |  | 2026-01-15 | 2026-08-06 |  |  |  |  |  |  |  |
| NB_2000 |  | Letting — TP-001 Groundworks & Substructure |  | 32d | 2026-01-15 | 2026-03-02 | NB_0001 | 3d | 0d |  | Procurement [96 h] | 161,778 |  |
| NB_2010 |  | Letting — TP-002 Structure |  | 57d | 2026-01-15 | 2026-04-08 | NB_0001 | 212d | 0d |  | Procurement [171 h] | 288,167 |  |
| NB_2020 |  | Letting — TP-003 Building Envelope |  | 140d | 2026-01-15 | 2026-08-06 | NB_0001 | 61d | 0d |  | Procurement [420 h] | 707,778 |  |
| NB_2030 |  | Letting — TP-004 Fit-out & White Space (brought forward) |  | 140d | 2026-01-15 | 2026-08-06 | NB_0001 | 43d | 0d |  | Procurement [420 h] | 707,778 |  |
| NB_2040 |  | Letting — TP-005 Mechanical |  | 62d | 2026-01-15 | 2026-04-15 | NB_0001 | 5d | 0d |  | Procurement [186 h] | 313,444 |  |
| NB_2050 |  | Letting — TP-006 Electrical & Power |  | 62d | 2026-01-15 | 2026-04-15 | NB_0001 | 11d | 0d |  | Procurement [186 h] | 313,444 |  |
| NB_2060 |  | Letting — TP-007 ELV / BMS-DCIM / Fire (brought forward) |  | 135d | 2026-01-15 | 2026-07-30 | NB_0001 | 10d | 0d |  | Procurement [405 h] | 682,500 |  |
| NB_2070 |  | Letting — TP-008 External Works & Security |  | 42d | 2026-01-15 | 2026-03-16 | NB_0001 | 349d | 0d |  | Procurement [126 h] | 212,333 |  |

| ID | WBS | Activity | Type | Duration | Start | Finish | Predecessors | Total float | Free float | Resources | Cost |
| --- | --- | --- | --- | --- | --- | --- | --- | --- | --- | --- | --- |
|  | 3.0 | **Civils, Groundworks & Substructure** |  |  | 2026-03-02 | 2026-09-02 |  |  |  |  |  |
| GW_1000 |  | Instruction to proceed | milestone | 0d | 2026-03-02 | 2026-03-02 | NB_2000 | 3d | 0d | Earthworks Crew | 2,668 |
| GW_1010 |  | Mobilisation, site hoarding and temporary haul road |  | 15d | 2026-03-02 | 2026-03-23 | GW_1000, NB_0002 | 3d | 0d | Earthworks Crew [90 h] | 240,149 |
| GW_1030 |  | Pre-condition survey and blasting permit discharge |  | 20d | 2026-03-02 | 2026-03-30 | GW_1000 | 459d | 0d | Surveying Team [60 h] | 160,099 |
| GW_1020 |  | Site compound base — offices, welfare and parking hardstanding |  | 12d | 2026-03-23 | 2026-04-10 | GW_1010 | 3d | 0d | Earthworks Crew [72 h] | 192,119 |
| GW_1100 |  | Topsoil strip and bulk earthworks — western two-thirds |  | 40d | 2026-03-23 | 2026-05-22 | GW_1010 | 504d | 0d | Earthworks Crew [240 h] | 640,396 |
| GW_1110 |  | Rock excavation and blasting — eastern third |  | 55d | 2026-03-30 | 2026-06-22 | GW_1030 | 459d | 0d | Earthworks Crew [330 h] | 880,545 |
| GW_1200 |  | Piling — Hall 1 and Hall 2 |  | 25d | 2026-04-10 | 2026-05-19 | GW_1020 | 93d | 0d | Piling Crew [125 h] | 333,540 |
| GW_1320 |  | Substructure — shared MEP spine |  | 25d | 2026-04-10 | 2026-05-19 | GW_1020 | 3d | 0d | Concrete Crew [250 h] | 667,079 |
| GW_1300 |  | Pile caps and ground beams — Halls 1-2 |  | 15d | 2026-05-19 | 2026-06-09 | GW_1200 | 507d | 0d | Concrete Crew [150 h] | 400,248 |
| GW_1400 |  | Ground-bearing slab — Halls 1-2 |  | 20d | 2026-05-19 | 2026-06-16 | GW_1200 | 93d | 0d | Concrete Crew [200 h] | 533,663 |
| GW_1420 |  | Substructure — generator compound and fuel storage bunds |  | 20d | 2026-05-19 | 2026-06-16 | GW_1200 | 447d | 0d | Concrete Crew [200 h] | 533,663 |
| GW_1120 |  | Made-ground remediation — north-west corner |  | 15d | 2026-05-22 | 2026-06-12 | GW_1100 | 504d | 0d | Earthworks Crew [90 h] | 240,149 |
| GW_1410 |  | Ground-bearing slab — Halls 3-4 |  | 20d | 2026-06-16 | 2026-07-15 | GW_1420 | 447d | 0d | Concrete Crew [200 h] | 533,663 |
| GW_1210 |  | Piling — Hall 3 and Hall 4 |  | 25d | 2026-06-22 | 2026-07-27 | GW_1110 | 459d | 0d | Piling Crew [125 h] | 333,540 |
| GW_1220 |  | Piling — substation, switchgear and generator compound |  | 18d | 2026-06-22 | 2026-07-16 | GW_1110 | 481d | 0d | Piling Crew [90 h] | 240,149 |
| GW_1500 |  | External drainage and below-ground services |  | 30d | 2026-07-15 | 2026-08-26 | GW_1900 | 447d | 0d | Civil Crew | 80,050 |
| GW_1900 |  | Substructure complete — handover to TP-002 | milestone | 0d | 2026-07-15 | 2026-07-15 | GW_1410 | 447d | 0d | Concrete Crew | 2,668 |
| GW_1310 |  | Pile caps and ground beams — Halls 3-4 |  | 15d | 2026-07-27 | 2026-08-17 | GW_1210 | 459d | 0d | Concrete Crew [150 h] | 400,248 |
| GW_1950 |  | Demobilise bulk earthworks plant |  | 5d | 2026-08-26 | 2026-09-02 | GW_1500 | 447d | 0d | Site Management [20 h] | 53,366 |
|  | 4.0 | **Structure** |  |  | 2026-04-08 | 2026-12-16 |  |  |  |  |  |
| ST_1000 |  | Instruction to proceed | milestone | 0d | 2026-04-08 | 2026-04-08 | NB_2010 | 212d | 0d | Steel & Precast Crew | 4,158 |
| ST_1010 |  | Design development — steel frame and precast connections |  | 35d | 2026-04-08 | 2026-05-29 | ST_1000 | 212d | 0d | Structural Design [140 h] | 582,151 |
| ST_1020 |  | Fabrication drawings and approval |  | 30d | 2026-05-29 | 2026-07-13 | ST_1010 | 212d | 0d | Structural Design | 124,747 |
| ST_1100 |  | Structural steel fabrication — Halls 1-2 |  | 55d | 2026-05-29 | 2026-08-17 | ST_1010 | 459d | 0d | Vendor (Steel Fabricator) | 228,702 |
| ST_1110 |  | Structural steel fabrication — Halls 3-4 |  | 55d | 2026-05-29 | 2026-08-17 | ST_1010 | 419d | 0d | Vendor (Steel Fabricator) | 228,702 |
| ST_1120 |  | Precast wall and floor unit manufacture |  | 60d | 2026-05-29 | 2026-08-24 | ST_1010 | 410d | 0d | Vendor (Precast Factory) | 249,493 |
| ST_1200 |  | Steel erection — Hall 1 |  | 22d | 2026-07-13 | 2026-08-12 | ST_1020 | 212d | 0d | Steel & Precast Crew [176 h] | 731,847 |
| ST_1210 |  | Steel erection — Hall 2 |  | 22d | 2026-08-12 | 2026-09-11 | ST_1200 | 422d | 0d | Steel & Precast Crew [176 h] | 731,847 |
| ST_1300 |  | Precast erection — shared MEP spine and mezzanine |  | 30d | 2026-08-12 | 2026-09-23 | ST_1200 | 212d | 0d | Steel & Precast Crew [240 h] | 997,973 |
| ST_1400 |  | Metal decking and structural topping — Halls 1-2 |  | 20d | 2026-08-17 | 2026-09-14 | ST_1110 | 419d | 0d | Steel & Precast Crew [160 h] | 665,315 |
| ST_1220 |  | Steel erection — Hall 3 |  | 22d | 2026-08-24 | 2026-09-23 | ST_1120 | 410d | 0d | Steel & Precast Crew [176 h] | 731,847 |
| ST_1310 |  | Precast erection — substation and switchgear building |  | 18d | 2026-09-11 | 2026-10-07 | ST_1210 | 422d | 0d | Steel & Precast Crew [144 h] | 598,784 |
| ST_1410 |  | Metal decking and structural topping — Halls 3-4 |  | 20d | 2026-09-14 | 2026-10-12 | ST_1900 | 419d | 0d | Steel & Precast Crew [160 h] | 665,315 |
| ST_1900 |  | Structure complete — Halls 1-2 | milestone | 0d | 2026-09-14 | 2026-09-14 | ST_1400 | 419d | 0d | Steel & Precast Crew | 4,158 |
| ST_1230 |  | Steel erection — Hall 4 |  | 22d | 2026-09-23 | 2026-10-23 | ST_1220 | 410d | 0d | Steel & Precast Crew [176 h] | 731,847 |
| ST_1500 |  | Roof steelwork and plant support frames |  | 25d | 2026-09-23 | 2026-10-28 | ST_1300 | 212d | 0d | Steel & Precast Crew [200 h] | 831,644 |
| ST_1910 |  | Structure complete — Halls 3-4 | milestone | 0d | 2026-10-12 | 2026-10-12 | ST_1410 | 419d | 0d | Steel & Precast Crew | 4,158 |
| ST_1600 |  | Fire protection to structural steel |  | 30d | 2026-10-28 | 2026-12-09 | ST_1500 | 372d | 0d | Fire Protection Crew [120 h] | 498,986 |
| ST_1950 |  | Crane demobilisation |  | 5d | 2026-12-09 | 2026-12-16 | ST_1600 | 372d | 0d | Steel & Precast Crew [40 h] | 166,329 |

| ID | WBS | Activity | Type | Duration | Start | Finish | Predecessors | Total float | Free float | Resources | Cost |
| --- | --- | --- | --- | --- | --- | --- | --- | --- | --- | --- | --- |
|  | 5.0 | **Building Envelope** |  |  | 2026-08-06 | 2027-02-17 |  |  |  |  |  |
| EN_1000 |  | Instruction to proceed | milestone | 0d | 2026-08-06 | 2026-08-06 | NB_2020 | 61d | 0d | Envelope Crew | 4,110 |
| EN_1010 |  | Design development — cladding, acoustic and fire-rated build-ups |  | 30d | 2026-08-06 | 2026-09-17 | EN_1000 | 61d | 0d | Facade Vendor [120 h] | 493,165 |
| EN_1020 |  | Cladding fabrication and delivery to site |  | 55d | 2026-08-06 | 2026-10-22 | EN_1000 | 132d | 0d | Facade Vendor | 226,034 |
| EN_1100 |  | Roofing — Halls 1-2 |  | 30d | 2026-09-17 | 2026-10-29 | EN_1010 | 406d | 0d | Envelope Crew [180 h] | 739,748 |
| EN_1200 |  | Wall cladding — Halls 1-2 |  | 30d | 2026-09-17 | 2026-10-29 | EN_1010 | 61d | 0d | Facade Crew [180 h] | 739,748 |
| EN_1110 |  | Roofing — Halls 3-4 |  | 30d | 2026-10-22 | 2026-12-03 | EN_1020 | 356d | 0d | Envelope Crew [180 h] | 739,748 |
| EN_1210 |  | Wall cladding — Halls 3-4 |  | 30d | 2026-10-22 | 2026-12-03 | EN_1020 | 132d | 0d | Facade Crew [180 h] | 739,748 |
| EN_1500 |  | WEATHERTIGHT — Halls 1-2 | milestone | 0d | 2026-10-29 | 2026-10-29 | EN_1200 | 61d | 0d | Envelope Crew | 4,110 |
| EN_1300 |  | Louvres, doors and external openings |  | 30d | 2026-12-03 | 2027-01-20 | EN_1510 | 331d | 0d | Facade Crew [180 h] | 739,748 |
| EN_1400 |  | Roof plant screens and walkways |  | 25d | 2026-12-03 | 2027-01-13 | EN_1110 | 356d | 0d | Facade Crew [150 h] | 616,457 |
| EN_1510 |  | WEATHERTIGHT — Halls 3-4 | milestone | 0d | 2026-12-03 | 2026-12-03 | EN_1210 | 132d | 0d | Envelope Crew | 4,110 |
| EN_1600 |  | Envelope snagging and sealant inspection |  | 20d | 2027-01-20 | 2027-02-17 | EN_1300 | 331d | 0d | Envelope Crew [120 h] | 493,165 |
| EN_1900 |  | Envelope complete | milestone | 0d | 2027-02-17 | 2027-02-17 | EN_1600 | 331d | 0d | Envelope Crew | 4,110 |
|  | 6.0 | **Mechanical** |  |  | 2026-01-15 | 2027-09-23 |  |  |  |  |  |
| IL_1200 |  | Chillers — order and manufacture |  | 130d | 2026-01-15 | 2026-07-23 | NB_0001 | 476d | 0d | Logistics | 615,737 |
| IL_1210 |  | Chillers — delivery to site |  | 7d | 2026-01-15 | 2026-01-26 | NB_0001 | 252d | 0d | Logistics | 33,155 |
| IL_1000 |  | Instruction to proceed | milestone | 0d | 2026-04-15 | 2026-04-15 | NB_2040 | 5d | 0d | Plumbing Crew | 4,736 |
| IL_1010 |  | Contract award administration and bonds |  | 10d | 2026-04-15 | 2026-04-29 | IL_1000 | 29d | 0d | Plumbing Crew [50 h] | 236,822 |
| IL_1020 |  | Performance security, guarantees and insurances in place |  | 10d | 2026-04-15 | 2026-04-29 | IL_1000 | 5d | 0d | Plumbing Crew [50 h] | 236,822 |
| IL_1100 |  | Design development — chilled water system |  | 28d | 2026-04-29 | 2026-06-10 | IL_1010 | 29d | 0d | MEP Design [112 h] | 530,481 |
| IL_1110 |  | Design development — heat recovery plant |  | 24d | 2026-04-29 | 2026-06-04 | IL_1010 | 33d | 0d | MEP Design [96 h] | 454,698 |
| IL_1120 |  | Design development — ventilation and smoke extract |  | 22d | 2026-04-29 | 2026-06-02 | IL_1010 | 35d | 0d | MEP Design [88 h] | 416,806 |
| IL_1125 |  | Design development — water treatment and adiabatic make-up |  | 15d | 2026-04-29 | 2026-05-22 | IL_1010 | 42d | 0d | MEP Design [60 h] | 284,186 |
| IL_1300 |  | Site establishment and mechanical setting out |  | 10d | 2026-04-29 | 2026-05-15 | IL_1000, IL_1020 | 5d | 0d | Plumbing Crew [50 h] | 236,822 |
| IL_1311 |  | Plantroom access — Data Hall 1 | milestone | 0d | 2026-05-15 | 2026-05-15 | IL_1300 | 5d | 0d | Plumbing Crew | 4,736 |
| IL_1312 |  | Plantroom access — Data Hall 2 | milestone | 0d | 2026-05-15 | 2026-05-15 | IL_1300 | 180d | 0d | Plumbing Crew | 4,736 |
| IL_1313 |  | Plantroom access — Data Hall 3 | milestone | 0d | 2026-05-15 | 2026-05-15 | IL_1300 | 245d | 0d | Plumbing Crew | 4,736 |
| IL_1314 |  | Plantroom access — Data Hall 4 | milestone | 0d | 2026-05-15 | 2026-05-15 | IL_1300 | 308d | 0d | Plumbing Crew | 4,736 |
| IL_1400 |  | Chilled water pipework — primary spine |  | 70d | 2026-05-19 | 2026-08-26 | IL_1311, GW_1320 | 3d | 0d | Plumbing Crew [350 h] | 1,657,753 |
| IL_1130 |  | Contractor and Engineer design review |  | 12d | 2026-06-10 | 2026-06-29 | IL_1100, IL_1110, IL_1120, IL_1125 | 29d | 0d | MEP Design [48 h] | 227,349 |
| IL_1220 |  | Dry coolers / adiabatic units — order and manufacture |  | 110d | 2026-06-29 | 2026-11-30 | IL_1130 | 182d | 0d | Logistics | 521,008 |
| IL_1240 |  | CRAH units (28 nr) — order and manufacture |  | 110d | 2026-06-29 | 2026-11-30 | IL_1130 | 29d | 0d | Logistics | 521,008 |
| IL_1260 |  | Waste-heat recovery plant — order and manufacture |  | 150d | 2026-06-29 | 2027-01-29 | IL_1130 | 155d | 0d | Logistics | 710,466 |
| IL_1410 |  | Chilled water pipework — Hall 1 secondary |  | 30d | 2026-07-15 | 2026-08-26 | IL_1400 SS+40d, GW_1400 | 73d | 0d | Plumbing Crew [150 h] | 710,466 |
| IL_1420 |  | Chilled water pipework — Hall 2 secondary |  | 30d | 2026-08-26 | 2026-10-07 | IL_1400, IL_1312 | 108d | 0d | Plumbing Crew [150 h] | 710,466 |
| IL_1430 |  | Chilled water pipework — Hall 3 secondary |  | 30d | 2026-08-26 | 2026-10-07 | IL_1400, IL_1313 | 173d | 0d | Plumbing Crew [150 h] | 710,466 |
| IL_1440 |  | Chilled water pipework — Hall 4 secondary |  | 30d | 2026-08-26 | 2026-10-07 | IL_1400, IL_1314 | 236d | 0d | Plumbing Crew [150 h] | 710,466 |
| IL_1500 |  | Pumps, buffer vessels and glycol dosing |  | 25d | 2026-08-26 | 2026-09-30 | IL_1410 | 73d | 0d | Plumbing Crew [125 h] | 592,055 |
| IL_1510 |  | Chiller installation and pipework connection |  | 20d | 2026-08-26 | 2026-09-23 | IL_1210, IL_1400 | 105d | 0d | Plumbing Crew [100 h] | 473,644 |
| IL_1600 |  | Ventilation and smoke extract to ancillary areas |  | 35d | 2026-09-09 | 2026-10-28 | IL_1510 SS+10d | 272d | 0d | Mechanical Crew [210 h] | 994,652 |
| IL_1605 |  | CHW system flushing — spine and secondary loops |  | 12d | 2026-09-30 | 2026-10-16 | IL_1500 | 73d | 0d | Plumbing Crew [60 h] | 284,186 |
| IL_1610 |  | Water treatment and adiabatic make-up |  | 15d | 2026-10-16 | 2026-11-06 | IL_1605 | 73d | 0d | Plumbing Crew [75 h] | 355,233 |
| IL_1230 |  | Dry coolers — delivery to site |  | 7d | 2026-11-30 | 2026-12-09 | IL_1220 | 182d | 0d | Logistics | 33,155 |
| IL_1250 |  | CRAH units — delivery to site |  | 10d | 2026-11-30 | 2026-12-14 | IL_1240 | 29d | 0d | Logistics | 47,364 |
| IL_1520 |  | Dry cooler installation — external roof plant |  | 60d | 2026-12-09 | 2027-03-09 | IL_1230, ST_1500 | 182d | 0d | Mechanical Crew [360 h] | 1,705,117 |
| IL_1531 |  | CRAH installation — Hall 1 (7 nr) |  | 18d | 2026-12-14 | 2027-01-13 | IL_1250, IL_1410, EN_1500 | 29d | 0d | Mechanical Crew [108 h] | 511,535 |
| IL_1532 |  | CRAH installation — Hall 2 (7 nr) |  | 18d | 2026-12-30 | 2027-01-27 | IL_1250, IL_1420, IL_1531 SS+10d | 50d | 0d | Mechanical Crew [108 h] | 511,535 |
| IL_1700 |  | Static completion and pressure testing — Section 1 |  | 8d | 2027-01-13 | 2027-01-25 | IL_1531, IL_1610, IL_1510 | 29d | 0d | Commissioning Team [64 h] | 303,132 |
| IL_1533 |  | CRAH installation — Hall 3 (7 nr) |  | 18d | 2027-01-15 | 2027-02-10 | IL_1250, IL_1430, IL_1532 SS+10d, EN_1510 | 105d | 0d | Mechanical Crew [108 h] | 511,535 |
| IL_1710 |  | Commissioning L4 — Hall 1 |  | 8d | 2027-01-25 | 2027-02-04 | IL_1700 | 29d | 0d | Commissioning Team [64 h] | 303,132 |
| IL_1701 |  | Static completion and pressure testing — Section 2 |  | 10d | 2027-01-27 | 2027-02-10 | IL_1532, IL_1510 | 50d | 0d | Commissioning Team [80 h] | 378,915 |
| IL_1270 |  | Waste-heat recovery plant — delivery |  | 7d | 2027-01-29 | 2027-02-09 | IL_1260 | 155d | 0d | Logistics | 33,155 |
| IL_1534 |  | CRAH installation — Hall 4 (7 nr) |  | 18d | 2027-01-29 | 2027-02-24 | IL_1250, IL_1440, IL_1533 SS+10d | 158d | 0d | Mechanical Crew [108 h] | 511,535 |
| IL_1711 |  | Commissioning L5 — Hall 1 (witnessed) |  | 5d | 2027-02-04 | 2027-02-11 | IL_1710 | 29d | 0d | Commissioning Team [40 h] | 189,457 |
| IL_1540 |  | Waste-heat recovery plant installation |  | 30d | 2027-02-09 | 2027-03-23 | IL_1270 | 155d | 0d | Plumbing Crew [150 h] | 710,466 |
| IL_1702 |  | Static completion and pressure testing — Section 3 |  | 10d | 2027-02-10 | 2027-02-24 | IL_1533, IL_1510 | 105d | 0d | Commissioning Team [80 h] | 378,915 |
| IL_1712 |  | Commissioning L4 — Hall 2 |  | 15d | 2027-02-10 | 2027-03-03 | IL_1701 | 50d | 0d | Commissioning Team [120 h] | 568,372 |
| IL_1800 |  | SECTIONAL COMPLETION 1 — Data Hall 1 mechanical | milestone | 0d | 2027-02-11 | 2027-02-11 | IL_1711 | 29d | 0d | Plumbing Crew | 4,736 |
| IL_1703 |  | Static completion and pressure testing — Section 4 |  | 10d | 2027-02-24 | 2027-03-10 | IL_1534, IL_1510 | 158d | 0d | Commissioning Team [80 h] | 378,915 |
| IL_1714 |  | Commissioning L4 — Hall 3 |  | 15d | 2027-02-24 | 2027-03-17 | IL_1702 | 105d | 0d | Commissioning Team [120 h] | 568,372 |
| IL_1713 |  | Commissioning L5 — Hall 2 (witnessed) |  | 8d | 2027-03-03 | 2027-03-15 | IL_1712 | 50d | 0d | Commissioning Team [64 h] | 303,132 |
| IL_1716 |  | Commissioning L4 — Hall 4 |  | 15d | 2027-03-10 | 2027-04-02 | IL_1703 | 158d | 0d | Commissioning Team [120 h] | 568,372 |
| IL_1810 |  | SECTIONAL COMPLETION 2 — Data Hall 2 mechanical | milestone | 0d | 2027-03-15 | 2027-03-15 | IL_1713 | 50d | 0d | Plumbing Crew | 4,736 |
| IL_1715 |  | Commissioning L5 — Hall 3 (witnessed) |  | 8d | 2027-03-17 | 2027-03-31 | IL_1714 | 105d | 0d | Commissioning Team [64 h] | 303,132 |
| IL_1820 |  | SECTIONAL COMPLETION 3 — Data Hall 3 mechanical | milestone | 0d | 2027-03-31 | 2027-03-31 | IL_1715 | 105d | 0d | Plumbing Crew | 4,736 |
| IL_1717 |  | Commissioning L5 — Hall 4 (witnessed) |  | 8d | 2027-04-02 | 2027-04-14 | IL_1716 | 158d | 0d | Commissioning Team [64 h] | 303,132 |
| IL_1720 |  | O&M manuals and as-built records |  | 12d | 2027-04-14 | 2027-04-30 | IL_1717 | 273d | 0d | Plumbing Crew [60 h] | 284,186 |
| IL_1730 |  | Warranties, spare parts and maintenance training handover |  | 8d | 2027-04-30 | 2027-05-13 | IL_1720 | 273d | 0d | Plumbing Crew [40 h] | 189,457 |
| IL_1550 |  | Waste-heat connection to boundary chamber |  | 12d | 2027-08-31 | 2027-09-16 | IL_1540, NB_7005 | 44d | 0d | Plumbing Crew [60 h] | 284,186 |

| ID | WBS | Activity | Type | Duration | Start | Finish | Predecessors | Total float | Free float | Resources | Cost |
| --- | --- | --- | --- | --- | --- | --- | --- | --- | --- | --- | --- |
| IL_1560 |  | Waste-heat 72-hour witnessed delivery test (4 MW at 70 C) |  | 5d | 2027-09-16 | 2027-09-23 | IL_1550 | 44d | 0d | Logistics | 23,682 |
| IL_1740 |  | Subcontract works complete | milestone | 0d | 2027-09-23 | 2027-09-23 | IL_1800, IL_1810, IL_1820, IL_1830, IL_1730 | 179d | 0d | Plumbing Crew | 4,736 |
| IL_1830 |  | SECTIONAL COMPLETION 4 — Data Hall 4 mechanical | milestone | 0d | 2027-09-23 | 2027-09-23 | IL_1717, IL_1560, IL_1520, IL_1600 | 44d | 0d | Plumbing Crew | 4,736 |
|  | 7.0 | **Electrical & Power** |  |  | 2026-01-15 | 2028-04-05 |  |  |  |  |  |
| VE_1200 |  | 110/20 kV transformers (2 nr) — order and manufacture |  | 260d | 2026-01-15 | 2027-01-27 | NB_0001 | 747d | 0d | MEP Design | 1,221,145 |
| VE_1220 |  | 20 kV ring main switchgear — order and manufacture |  | 190d | 2026-01-15 | 2026-10-15 | NB_0001 | 379d | 0d | Logistics | 892,375 |
| VE_1240 |  | Standby generators (8 nr) — order and manufacture |  | 200d | 2026-01-15 | 2026-10-29 | NB_0001 | -15d | 0d | Logistics | 939,343 |
| VE_1000 |  | Instruction to proceed | milestone | 0d | 2026-04-15 | 2026-04-15 | NB_2050 | 11d | 0d | Electrical Crew | 4,697 |
| VE_1010 |  | Contract award administration, bonds and securities |  | 10d | 2026-04-15 | 2026-04-29 | VE_1000 | 11d | 0d | Electrical Crew [60 h] | 281,803 |
| VE_1100 |  | Design development — HV/MV distribution |  | 30d | 2026-04-29 | 2026-06-12 | VE_1010 | 492d | 0d | MEP Design [120 h] | 563,606 |
| VE_1110 |  | Design development — LV, busway and containment |  | 25d | 2026-04-29 | 2026-06-05 | VE_1010 | 31d | 0d | MEP Design [100 h] | 469,671 |
| VE_1120 |  | Design development — generators, UPS and battery systems |  | 25d | 2026-04-29 | 2026-06-05 | VE_1010 | 497d | 0d | MEP Design [100 h] | 469,671 |
| VE_1260 |  | UPS modules (16 nr) — order and manufacture |  | 150d | 2026-04-29 | 2026-11-30 | VE_1010 | 11d | 0d | Logistics | 704,507 |
| VE_1280 |  | Battery systems — order and manufacture |  | 120d | 2026-04-29 | 2026-10-19 | VE_1010 | 43d | 0d | Logistics | 563,606 |
| VE_1400 |  | Site establishment and electrical setting out |  | 10d | 2026-04-29 | 2026-05-15 | VE_1010 | 103d | 0d | Electrical Crew [60 h] | 281,803 |
| VE_1500 |  | 110 kV termination, metering and protection to DNO interface |  | 45d | 2026-05-15 | 2026-07-20 | VE_1400 | 103d | 0d | Electrical Crew [270 h] | 1,268,113 |
| VE_1600 |  | Hall substation 20/0.4 kV — Hall 1 |  | 25d | 2026-05-15 | 2026-06-22 | VE_1400 | 128d | 0d | Electrical Crew [150 h] | 704,507 |
| VE_1620 |  | Containment and small power — shared MEP spine |  | 40d | 2026-05-15 | 2026-07-13 | VE_1400 | 484d | 0d | Electrical Crew [240 h] | 1,127,211 |
| VE_1300 |  | Overhead busway — order and manufacture |  | 100d | 2026-06-05 | 2026-10-26 | VE_1110 | 31d | 0d | Logistics | 469,671 |
| VE_1601 |  | Hall substation 20/0.4 kV — Hall 2 |  | 25d | 2026-06-05 | 2026-07-13 | VE_1600 SS+15d | 156d | 0d | Electrical Crew [150 h] | 704,507 |
| VE_1130 |  | Contractor and Engineer design review |  | 12d | 2026-06-12 | 2026-07-01 | VE_1100, VE_1110, VE_1120 | 492d | 0d | MEP Design [48 h] | 225,442 |
| VE_1602 |  | Hall substation 20/0.4 kV — Hall 3 |  | 25d | 2026-06-29 | 2026-08-03 | VE_1601 SS+15d | 206d | 0d | Electrical Crew [150 h] | 704,507 |
| VE_1603 |  | Hall substation 20/0.4 kV — Hall 4 |  | 25d | 2026-07-20 | 2026-08-24 | VE_1602 SS+15d | 254d | 0d | Electrical Crew [150 h] | 704,507 |
| VE_1230 |  | Switchgear — delivery to site |  | 7d | 2026-10-15 | 2026-10-26 | VE_1220 | 379d | 0d | Logistics | 32,877 |
| VE_1290 |  | Battery systems — delivery to site |  | 5d | 2026-10-19 | 2026-10-26 | VE_1280 | 43d | 0d | Logistics | 23,484 |
| VE_1310 |  | Busway — delivery to site |  | 7d | 2026-10-26 | 2026-11-04 | VE_1300 | 31d | 0d | Logistics | 32,877 |
| VE_1520 |  | 20 kV ring main switchboard installation |  | 30d | 2026-10-26 | 2026-12-07 | VE_1230 | 379d | 0d | Electrical Crew [180 h] | 845,408 |
| VE_1250 |  | Generators — delivery to site |  | 10d | 2026-10-29 | 2026-11-12 | VE_1240 | -15d | 0d | Logistics | 46,967 |
| VE_1610 |  | Overhead busway and containment — Hall 1 |  | 30d | 2026-11-04 | 2026-12-16 | VE_1310, VE_1600 | 31d | 0d | Electrical Crew [180 h] | 845,408 |
| VE_1611 |  | Overhead busway and containment — Hall 2 |  | 30d | 2026-11-04 | 2026-12-16 | VE_1310, VE_1601 | 74d | 0d | Electrical Crew [180 h] | 845,408 |
| VE_1612 |  | Overhead busway and containment — Hall 3 |  | 30d | 2026-11-04 | 2026-12-16 | VE_1310, VE_1602 | 139d | 0d | Electrical Crew [180 h] | 845,408 |
| VE_1613 |  | Overhead busway and containment — Hall 4 |  | 30d | 2026-11-04 | 2026-12-16 | VE_1310, VE_1603 | 202d | 0d | Electrical Crew [180 h] | 845,408 |
| VE_1530 |  | Standby generator installation (8 nr) and paralleling |  | 55d | 2026-11-12 | 2027-02-03 | VE_1250 | -15d | 0d | Electrical Crew [330 h] | 1,549,915 |
| VE_1270 |  | UPS — delivery to site |  | 7d | 2026-11-30 | 2026-12-09 | VE_1260 | 11d | 0d | Logistics | 32,877 |
| VE_1550 |  | UPS and battery system installation |  | 40d | 2026-12-09 | 2027-02-09 | VE_1270, VE_1290 | 11d | 0d | Electrical Crew [240 h] | 1,127,211 |
| VE_1210 |  | Transformers — delivery to site |  | 10d | 2027-01-27 | 2027-02-10 | VE_1200 | -40d | 0d | Logistics | 46,967 |
| VE_1540 |  | Fuel storage, bunding and 48-hour fuel system |  | 30d | 2027-02-03 | 2027-03-17 | VE_1530 | 176d | 0d | Electrical Crew [180 h] | 845,408 |
| VE_1510 |  | Transformer installation and HV terminations |  | 35d | 2027-02-10 | 2027-04-02 | VE_1210, VE_1500 | -40d | 0d | Electrical Crew [210 h] | 986,310 |
| VE_1700 |  | Earthing, bonding, lightning protection and metering |  | 50d | 2027-04-02 | 2027-06-14 | VE_1510 | 116d | 0d | Electrical Crew [300 h] | 1,409,014 |
| VE_1800 |  | Hall 1 substation energisation and LV distribution live |  | 15d | 2027-04-02 | 2027-04-23 | VE_1600, VE_1610, VE_1510, NB_7001 | -40d | 0d | Electrical Crew [90 h] | 422,704 |
| VE_1900 |  | Commissioning L4 and L5 — Hall 1 (witnessed) |  | 20d | 2027-04-23 | 2027-05-24 | VE_1800, VE_1530 SS+30d, VE_1550 | -40d | 0d | Commissioning Team [160 h] | 751,474 |
| VE_1950 |  | SECTIONAL COMPLETION 1 — Data Hall 1 electrical | milestone | 0d | 2027-05-24 | 2027-05-24 | VE_1900 | -40d | 0d | Electrical Crew | 4,697 |
| VE_1801 |  | Hall 2 substation energisation and LV distribution live |  | 15d | 2027-06-30 | 2027-07-21 | VE_1601, VE_1611, VE_1800, NB_7002 | -58d | 0d | Electrical Crew [90 h] | 422,704 |
| VE_1901 |  | Commissioning L4 and L5 — Hall 2 (witnessed) |  | 20d | 2027-07-21 | 2027-08-18 | VE_1801, VE_1950 | -58d | 0d | Commissioning Team [160 h] | 751,474 |
| VE_1951 |  | SECTIONAL COMPLETION 2 — Data Hall 2 electrical | milestone | 0d | 2027-08-18 | 2027-08-18 | VE_1901 | -58d | 0d | Electrical Crew | 4,697 |
| VE_1802 |  | Hall 3 substation energisation and LV distribution live |  | 15d | 2027-11-01 | 2027-11-22 | VE_1602, VE_1612, VE_1801, NB_7003 | -81d | 0d | Electrical Crew [90 h] | 422,704 |
| VE_1902 |  | Commissioning L4 and L5 — Hall 3 (witnessed) |  | 20d | 2027-11-22 | 2027-12-21 | VE_1802, VE_1951 | -81d | 0d | Commissioning Team [160 h] | 751,474 |
| VE_1952 |  | SECTIONAL COMPLETION 3 — Data Hall 3 electrical | milestone | 0d | 2027-12-21 | 2027-12-21 | VE_1902 | -81d | 0d | Electrical Crew | 4,697 |
| VE_1803 |  | Hall 4 substation energisation and LV distribution live |  | 15d | 2028-01-31 | 2028-02-21 | VE_1603, VE_1613, VE_1802, NB_7004 | -80d | 0d | Electrical Crew [90 h] | 422,704 |
| VE_1903 |  | Commissioning L4 and L5 — Hall 4 (witnessed) |  | 20d | 2028-02-21 | 2028-03-20 | VE_1803, VE_1952 | -80d | 0d | Commissioning Team [160 h] | 751,474 |
| VE_1953 |  | SECTIONAL COMPLETION 4 — Data Hall 4 electrical | milestone | 0d | 2028-03-20 | 2028-03-20 | VE_1903, VE_1540, VE_1700 | -80d | 0d | Electrical Crew | 4,697 |
| VE_1960 |  | O&M manuals, as-builts and warranties |  | 12d | 2028-03-20 | 2028-04-05 | VE_1903 | 43d | 0d | Electrical Crew [72 h] | 338,163 |
| VE_1970 |  | Subcontract works complete | milestone | 0d | 2028-04-05 | 2028-04-05 | VE_1950, VE_1951, VE_1952, VE_1953, VE_1960 | 43d | 0d | Electrical Crew | 4,697 |

| ID | WBS | Activity | Type | Duration | Start | Finish | Predecessors | Total float | Free float | Resources | Cost |
| --- | --- | --- | --- | --- | --- | --- | --- | --- | --- | --- | --- |
|  | 8.0 | **ELV / BMS-DCIM / Fire** |  |  | 2026-07-30 | 2027-04-02 |  |  |  |  |  |
| EL_1000 |  | Instruction to proceed | milestone | 0d | 2026-07-30 | 2026-07-30 | NB_2060 | 10d | 0d | ICT Crew | 3,534 |
| EL_1010 |  | Design development — BMS/DCIM, fire detection and suppression |  | 40d | 2026-07-30 | 2026-09-24 | EL_1000 | 10d | 0d | MEP Design [120 h] | 424,089 |
| EL_1100 |  | Containment and cable pulling — Halls 1-2 |  | 30d | 2026-09-24 | 2026-11-05 | EL_1010 | 10d | 0d | ICT Crew [120 h] | 424,089 |
| EL_1110 |  | Containment and cable pulling — Halls 3-4 |  | 30d | 2026-09-24 | 2026-11-05 | EL_1010 | 38d | 0d | ICT Crew [120 h] | 424,089 |
| EL_1200 |  | Fire detection installation — Halls 1-2 |  | 25d | 2026-11-05 | 2026-12-10 | EL_1100 | 10d | 0d | Fire Protection Crew [100 h] | 353,408 |
| EL_1210 |  | Fire detection installation — Halls 3-4 |  | 25d | 2026-11-05 | 2026-12-10 | EL_1110 | 38d | 0d | Fire Protection Crew [100 h] | 353,408 |
| EL_1400 |  | BMS/DCIM head-end and field devices |  | 40d | 2026-11-05 | 2027-01-05 | EL_1110 | 331d | 0d | BMS Crew [120 h] | 424,089 |
| EL_1300 |  | Gas suppression installation — Halls 1-2 |  | 25d | 2026-12-10 | 2027-01-20 | EL_1200 | 10d | 0d | Fire Protection Crew | 88,352 |
| EL_1310 |  | Gas suppression installation — Halls 3-4 |  | 25d | 2026-12-10 | 2027-01-20 | EL_1210 | 38d | 0d | Fire Protection Crew [100 h] | 353,408 |
| EL_1500 |  | Security, access control and CCTV — internal |  | 30d | 2027-01-05 | 2027-02-17 | EL_1400 | 331d | 0d | ICT Crew [120 h] | 424,089 |
| EL_1600 |  | L3 point-to-point testing — Section 1 |  | 20d | 2027-01-20 | 2027-02-17 | EL_1300 | 10d | 0d | Commissioning Team [120 h] | 424,089 |
| EL_1610 |  | L3 point-to-point testing — Sections 2-4 |  | 25d | 2027-01-20 | 2027-02-24 | EL_1310 | 38d | 0d | Commissioning Team [150 h] | 530,111 |
| EL_1700 |  | L4 integrated systems testing support — Section 1 |  | 15d | 2027-02-17 | 2027-03-10 | EL_1600 | 10d | 0d | Commissioning Team [90 h] | 318,067 |
| EL_1710 |  | L4 integrated systems testing support — Sections 2-4 |  | 25d | 2027-02-24 | 2027-04-02 | EL_1610 | 38d | 0d | Commissioning Team [150 h] | 530,111 |
| EL_1900 |  | ELV complete — Section 1 | milestone | 0d | 2027-03-10 | 2027-03-10 | EL_1700 | 10d | 0d | ICT Crew | 3,534 |
| EL_1910 |  | ELV complete — Sections 2-4 | milestone | 0d | 2027-04-02 | 2027-04-02 | EL_1710 | 38d | 0d | ICT Crew | 3,534 |
|  | 9.0 | **Fit-out & White Space** |  |  | 2026-08-06 | 2027-02-05 |  |  |  |  |  |
| FI_1000 |  | Instruction to proceed | milestone | 0d | 2026-08-06 | 2026-08-06 | NB_2030 | 43d | 0d | Fit-Out Crew | 1,523 |
| FI_1010 |  | Design development — white-space containment and finishes |  | 30d | 2026-08-06 | 2026-09-17 | FI_1000 | 43d | 0d | Interior Design [90 h] | 137,092 |
| FI_1100 |  | Internal blockwork and partitions — Halls 1-2 |  | 30d | 2026-09-17 | 2026-10-29 | FI_1010 | 406d | 0d | Fit-Out Crew [300 h] | 456,973 |
| FI_1110 |  | Internal blockwork and partitions — Halls 3-4 |  | 30d | 2026-09-17 | 2026-10-29 | FI_1010 | 43d | 0d | Fit-Out Crew [300 h] | 456,973 |
| FI_1200 |  | Raised access floor — Hall 1 |  | 20d | 2026-09-17 | 2026-10-15 | FI_1010 | 76d | 0d | Fit-Out Crew [200 h] | 304,649 |
| FI_1220 |  | Raised access floor — Hall 3 |  | 20d | 2026-09-17 | 2026-10-15 | FI_1010 | 396d | 0d | Fit-Out Crew [200 h] | 304,649 |
| FI_1210 |  | Raised access floor — Hall 2 |  | 20d | 2026-10-15 | 2026-11-12 | FI_1200 | 76d | 0d | Fit-Out Crew [200 h] | 304,649 |
| FI_1230 |  | Raised access floor — Hall 4 |  | 20d | 2026-10-15 | 2026-11-12 | FI_1220 | 396d | 0d | Fit-Out Crew [200 h] | 304,649 |
| FI_1300 |  | Hot/cold aisle containment — Halls 1-2 |  | 25d | 2026-10-29 | 2026-12-03 | FI_1110 | 43d | 0d | Fit-Out Crew [250 h] | 380,811 |
| FI_1400 |  | Administration and NOC block fit-out |  | 40d | 2026-10-29 | 2026-12-28 | FI_1110 | 366d | 0d | Fit-Out Crew [400 h] | 609,298 |
| FI_1310 |  | Hot/cold aisle containment — Halls 3-4 |  | 25d | 2026-11-12 | 2026-12-17 | FI_1210 | 76d | 0d | Fit-Out Crew [250 h] | 380,811 |
| FI_1500 |  | Painting, sealing and final finishes — Halls 1-2 |  | 20d | 2026-12-03 | 2027-01-05 | FI_1300 | 43d | 0d | Fit-Out Crew [200 h] | 304,649 |
| FI_1510 |  | Painting, sealing and final finishes — Halls 3-4 |  | 20d | 2026-12-17 | 2027-01-20 | FI_1310 | 76d | 0d | Fit-Out Crew [200 h] | 304,649 |
| FI_1600 |  | White-space cleaning to data-centre standard — Halls 1-2 |  | 12d | 2027-01-05 | 2027-01-22 | FI_1500 | 43d | 0d | Fit-Out Crew [120 h] | 182,789 |
| FI_1610 |  | White-space cleaning to data-centre standard — Halls 3-4 |  | 12d | 2027-01-20 | 2027-02-05 | FI_1510 | 76d | 0d | Fit-Out Crew [120 h] | 182,789 |
| FI_1900 |  | Finishes complete — Section 1 | milestone | 0d | 2027-01-22 | 2027-01-22 | FI_1600 | 43d | 0d | Fit-Out Crew | 1,523 |
| FI_1910 |  | Finishes complete — Sections 3-4 | milestone | 0d | 2027-02-05 | 2027-02-05 | FI_1610 | 141d | 0d | Fit-Out Crew | 1,523 |

| ID | WBS | Activity | Type | Duration | Start | Finish | Predecessors | Total float | Free float | Constraint | Resources | Cost | Contract Date |
| --- | --- | --- | --- | --- | --- | --- | --- | --- | --- | --- | --- | --- | --- |
|  | 10.0 | **External Works & Security** |  |  | 2026-03-16 | 2027-01-22 |  |  |  |  |  |  |  |
| EX_1000 |  | Instruction to proceed | milestone | 0d | 2026-03-16 | 2026-03-16 | NB_2070 | 349d | 0d |  | Civil Crew | 3,652 |  |
| EX_1010 |  | Temporary site fencing and gate installation |  | 10d | 2026-03-16 | 2026-03-30 | EX_1000, NB_0002 | 349d | 0d |  | Civil Crew [50 h] | 182,609 |  |
| EX_1100 |  | Fibre entry — route A ducting and chambers |  | 30d | 2026-03-30 | 2026-05-15 | EX_1010 | 349d | 0d |  | Civil Crew [150 h] | 547,826 |  |
| EX_1110 |  | Fibre entry — route B ducting and chambers |  | 30d | 2026-05-15 | 2026-06-29 | EX_1100 | 349d | 0d |  | Civil Crew [150 h] | 547,826 |  |
| EX_1200 |  | Permanent site roads and hardstanding — phase 1 |  | 35d | 2026-06-29 | 2026-08-17 | EX_1110 | 349d | 0d |  | Civil Crew | 127,826 |  |
| EX_1300 |  | Perimeter security fence and gates |  | 30d | 2026-08-17 | 2026-09-28 | EX_1200 | 349d | 0d |  | Civil Crew [150 h] | 547,826 |  |
| EX_1400 |  | External lighting and CCTV columns |  | 25d | 2026-09-28 | 2026-11-02 | EX_1300 | 349d | 0d |  | Civil Crew [125 h] | 456,522 |  |
| EX_1500 |  | Car parking, footpaths and hardstanding — permanent |  | 30d | 2026-11-02 | 2026-12-14 | EX_1400 | 349d | 0d |  | Civil Crew [150 h] | 547,826 |  |
| EX_1700 |  | Gatehouse and weighbridge commissioning |  | 20d | 2026-11-02 | 2026-11-30 | EX_1400 | 384d | 0d |  | Civil Crew [100 h] | 365,217 |  |
| EX_1600 |  | Landscaping and reinstatement |  | 25d | 2026-12-14 | 2027-01-22 | EX_1500 | 349d | 0d |  | Landscaping Crew [100 h] | 365,217 |  |
| EX_1900 |  | External works complete | milestone | 0d | 2027-01-22 | 2027-01-22 | EX_1600 | 349d | 0d |  | Civil Crew | 3,652 |  |
|  | 11.0 | **Commissioning & Handover** |  |  | 2027-05-24 | 2028-04-24 |  |  |  |  |  |  |  |
| NB_4000 |  | Integrated systems testing (L4) — Section 1 |  | 15d | 2027-05-24 | 2027-06-14 | IL_1800, VE_1950, EL_1900, FI_1900 | -40d | 0d |  | Commissioning Team [120 h] | 299,352 |  |
| NB_4001 |  | Integrated load-bank test (L5, 24 h) — Section 1 |  | 5d | 2027-06-14 | 2027-06-21 | NB_4000 | -40d | 0d |  | Commissioning Team [40 h] | 99,784 |  |
| NB_4002 |  | Occupancy inspection (käyttöönottotarkastus) — Section 1 |  | 5d | 2027-06-21 | 2027-06-29 | NB_4001 | -40d | 0d |  | Commissioning Team [40 h] | 99,784 |  |
| NB_4003 |  | TAKING OVER — SECTION 1 (Cl. 10.1) (MS) | milestone | 0d | 2027-06-29 | 2027-06-29 | NB_4002 | -40d | 0d | finish on 2027-05-02 | Site Management | 2,495 | 2027-05-02 |
| NB_4100 |  | Integrated systems testing (L4) — Section 2 |  | 15d | 2027-08-18 | 2027-09-08 | IL_1810, VE_1951, EL_1910, FI_1610, NB_4000 SS+10d | -58d | 0d |  | Commissioning Team [120 h] | 299,352 |  |
| NB_4101 |  | Integrated load-bank test (L5, 24 h) — Section 2 |  | 5d | 2027-09-08 | 2027-09-15 | NB_4100 | -58d | 0d |  | Commissioning Team [40 h] | 99,784 |  |
| NB_4102 |  | Occupancy inspection (käyttöönottotarkastus) — Section 2 |  | 5d | 2027-09-15 | 2027-09-22 | NB_4101 | -58d | 0d |  | Commissioning Team [40 h] | 99,784 |  |
| NB_4103 |  | TAKING OVER — SECTION 2 (Cl. 10.1) (MS) | milestone | 0d | 2027-09-22 | 2027-09-22 | NB_4102 | -58d | 0d | finish on 2027-07-02 | Site Management | 2,495 | 2027-07-02 |
| NB_4200 |  | Integrated systems testing (L4) — Section 3 |  | 15d | 2027-12-21 | 2028-01-13 | IL_1820, VE_1952, EL_1910, FI_1910, NB_4100 SS+10d | -81d | 0d |  | Commissioning Team [120 h] | 299,352 |  |
| NB_4201 |  | Integrated load-bank test (L5, 24 h) — Section 3 |  | 5d | 2028-01-13 | 2028-01-20 | NB_4200 | -81d | 0d |  | Commissioning Team [40 h] | 99,784 |  |
| NB_4202 |  | Occupancy inspection (käyttöönottotarkastus) — Section 3 |  | 5d | 2028-01-20 | 2028-01-27 | NB_4201 | -81d | 0d |  | Commissioning Team [40 h] | 99,784 |  |
| NB_4203 |  | TAKING OVER — SECTION 3 (Cl. 10.1) (MS) | milestone | 0d | 2028-01-27 | 2028-01-27 | NB_4202 | -81d | 0d | finish on 2027-10-02 | Site Management | 2,495 | 2027-10-02 |
| NB_4300 |  | Integrated systems testing (L4) — Section 4 |  | 15d | 2028-03-20 | 2028-04-10 | IL_1830, VE_1953, EL_1910, FI_1910, NB_4200 SS+10d | -80d | 0d |  | Commissioning Team [120 h] | 299,352 |  |
| NB_4301 |  | Integrated load-bank test (L5, 24 h) — Section 4 |  | 5d | 2028-04-10 | 2028-04-17 | NB_4300 | -80d | 0d |  | Commissioning Team [40 h] | 99,784 |  |
| NB_4302 |  | Occupancy inspection (käyttöönottotarkastus) — Section 4 |  | 5d | 2028-04-17 | 2028-04-24 | NB_4301 | -80d | 0d |  | Commissioning Team [40 h] | 99,784 |  |
| NB_4303 |  | TAKING OVER — SECTION 4 (Cl. 10.1) (MS) | milestone | 0d | 2028-04-24 | 2028-04-24 | NB_4302 | -80d | 0d | finish on 2028-01-02 | Site Management | 2,495 | 2028-01-02 |
| NB_5000 |  | TIME FOR COMPLETION — whole of the Works (Cl. 8.2) (MS) | milestone | 0d | 2028-04-24 | 2028-04-24 | NB_4303 | -80d | 0d | finish on 2028-01-02 | Site Management | 2,495 | 2028-01-02 |

| ID | WBS | Activity | Type | Duration | Start | Finish | Predecessors | Total float | Resources | Cost |
| --- | --- | --- | --- | --- | --- | --- | --- | --- | --- | --- |
|  | 12.0 | **Close-out** |  |  | 2028-04-24 | 2028-06-05 |  |  |  |  |
| NB_6000 |  | As-built records, O&M and handover documentation |  | 30d | 2028-04-24 | 2028-06-05 | NB_5000 | 0d | Site Management [120 h] | 299,352 |
| NB_6100 |  | Final account, spares, warranties and close-out (MS) | milestone | 0d | 2028-06-05 | 2028-06-05 | NB_6000 | 0d | Site Management | 2,495 |
| NB_9999 |  | PROJECT HANDOVER COMPLETE (MS) | milestone | 0d | 2028-06-05 | 2028-06-05 | GW_1120, GW_1300, GW_1310, GW_1220, GW_1950, ST_1100, ST_1230, ST_1310, ST_1910, ST_1950, EN_1100, EN_1400, EN_1900, FI_1100, FI_1230, FI_1400, IL_1200, IL_1740, VE_1130, VE_1520, VE_1620, VE_1970, EL_1500, EX_1700, EX_1900, NB_1050, NB_1100, NB_1110, NB_1210, NB_7006, NB_4003, NB_4103, NB_4203, NB_6100 | 0d | Site Management | 1,685 |
