# Polaris DC-1 — Aviapolis Data Campus Phase 1

Schedule from Primavera P6, 2026-03-02 to 2027-12-31, costs in EUR.
Must finish by 2027-12-31

## Resources

| Resource | Group | Rate |
| --- | --- | --- |
| Site Management | labor | 85 |
| Procurement | labor | 80 |
| Design Management | labor | 92 |
| Site Establishment Crew | labor | 52 |
| Surveying Team | labor | 90 |
| Civil Crew | labor | 55 |
| Geotechnical Consultant | labor | 110 |
| Specialist Design | labor | 105 |
| Architectural Design | labor | 95 |
| Structural Design | labor | 95 |
| Vendor (Steel Fabricator) | labor | 70 |
| Vendor (Precast Factory) | labor | 65 |
| Demolition Crew | labor | 48 |
| Electrical Crew | labor | 64 |
| QA/QC Inspector | labor | 85 |
| Environmental Crew | labor | 52 |
| Earthworks Crew | labor | 55 |
| Commissioning Team | labor | 88 |
| ICT Crew | labor | 62 |
| MEP Design | labor | 95 |
| Civil Design | labor | 90 |
| BIM Team | labor | 88 |
| Rock Excavation Crew | labor | 62 |
| Concrete Crew | labor | 56 |
| Piling Crew | labor | 68 |
| Waterproofing Crew | labor | 52 |
| Mechanical Crew | labor | 62 |
| Structural Steel Crew | labor | 66 |
| Plumbing Crew | labor | 58 |
| Steel & Precast Crew | labor | 62 |
| Winter Protection Crew | labor | 50 |
| Facade Crew | labor | 58 |
| Fire Protection Crew | labor | 58 |
| Fit-Out Crew | labor | 54 |
| Insulation Crew | labor | 52 |
| BMS Crew | labor | 70 |
| Landscaping Crew | labor | 45 |

## Schedule

| ID | Activity | Type | Duration | Start | Finish | Predecessors | Total float | Resources | Cost |
| --- | --- | --- | --- | --- | --- | --- | --- | --- | --- |
| 1 | Project Start — Commencement Date (02 Mar 2026) | milestone | 0d | 2026-03-02 | 2026-03-02 |  | 0d |  |  |
| 2 | A0101 Site possession & contract handover from Employer |  | 3d | 2026-03-02 | 2026-03-04 | 1 | 0d | Site Management [72 h] | 99,694 |
| 209 | Z0009 RISK: LT-01 transformers order-by 16 Jan 2026 precedes Commencement by 6.4 weeks — 52-week lead unsatisfiable in-programme (ADVANCE PROCUREMENT INSTRUCTION REQUIRED) | milestone | 0d | 2026-03-02 | 2026-03-02 | 36 | 479d |  |  |
| 36 | D0101 LT-01 110/20 kV transformers — ADVANCE ORDER placed 16 Jan 2026, PRE-COMMENCEMENT (see Z0009 risk line) | milestone | 0d | 2026-03-02 | 2026-03-02 | 1 SS | 110d | Procurement |  |
| 37 | D0102 LT-01 transformers — manufacture & delivery to site (residual window from Commencement; register requires delivery by 15 Jan 2027) |  | 229d | 2026-03-02 | 2027-01-14 | 36 | 110d | Procurement [3664 h] | 2,465,660 |
| 10 | A0109 Blasting permit application + pre-condition survey (Vantaa rescue authority) |  | 20d | 2026-03-05 | 2026-04-01 | 2 | 56d | Design Management [480 h] | 77,672 |
| 13 | A0112 Building Control commencement notice (aloitusilmoitus, ≥7 days before site works) |  | 5d | 2026-03-05 | 2026-03-11 | 2 | 31d | Site Management [80 h] | 16,635 |
| 14 | A0113 Statutory supervisors (vastaava työnjohtaja, KVV, IV) appointed & approved |  | 20d | 2026-03-05 | 2026-04-01 | 2 | 386d | Site Management [320 h] | 66,540 |
| 15 | A0114 Environmental permits, discharge consent & monitoring plan in place |  | 10d | 2026-03-05 | 2026-03-18 | 2 | 433d | Design Management [160 h] | 33,274 |
| 3 | A0102 Project mobilisation, BIM setup & document control |  | 10d | 2026-03-05 | 2026-03-18 | 2 | 0d | Design Management [320 h] | 276,970 |
| 4 | A0103 Site establishment — offices, welfare, hoarding, temporary services |  | 5d | 2026-03-05 | 2026-03-11 | 2 | 23d | Site Establishment Crew [320 h] | 465,200 |
| 7 | A0106 Setting-out, surveying & geotechnical verification of working platform |  | 15d | 2026-03-05 | 2026-03-25 | 2 | 95d | Surveying Team [360 h] | 105,319 |
| 12 | A0111 Archaeological watching brief — site clearance phase, NW corner |  | 5d | 2026-03-12 | 2026-03-18 | 4 | 26d | Specialist Design [80 h] | 38,790 |
| 6 | A0105 Site access road & one-way haul route from Tikkurilantie + wheel-wash |  | 8d | 2026-03-12 | 2026-03-23 | 4 | 23d | Civil Crew [384 h] | 199,418 |
| 9 | A0108 Vibration & noise monitoring; pre-condition survey of neighbours (permit cond. 9/11/12) |  | 3d | 2026-03-12 | 2026-03-16 | 4 | 68d | Geotechnical Consultant [48 h] | 49,855 |
| 16 | A0115 Winter construction methodology & cold-weather strategy |  | 8d | 2026-03-19 | 2026-03-30 | 3 | 311d | Specialist Design [128 h] | 38,807 |
| 17 | B0101 Design: concept design consolidation — S1 gate & Engineer 14-day review |  | 15d | 2026-03-19 | 2026-04-08 | 3 | 25d | Architectural Design [480 h] | 332,398 |
| 29 | C0102 TP-002 Structure (steel & precast) — tender & award |  | 15d | 2026-03-19 | 2026-04-08 | 3 | 49d | Procurement [360 h] | 166,219 |
| 30 | C0103 TP-003 Envelope — tender & award |  | 20d | 2026-03-19 | 2026-04-15 | 3 | 251d | Procurement [480 h] | 155,176 |
| 31 | C0104 TP-004 Architectural & containment — tender & award |  | 15d | 2026-03-19 | 2026-04-08 | 3 | 304d | Procurement [360 h] | 121,919 |
| 32 | C0105 TP-005 Mechanical — tender & award |  | 25d | 2026-03-19 | 2026-04-22 | 3 | 66d | Procurement [600 h] | 288,107 |
| 33 | C0106 TP-006 Electrical — tender & award |  | 25d | 2026-03-19 | 2026-04-22 | 3 | 0d | Procurement [600 h] | 332,406 |
| 34 | C0107 TP-007 ELV / BMS / fire — tender & award |  | 20d | 2026-03-19 | 2026-04-15 | 3 | 231d | Procurement [480 h] | 166,251 |
| 35 | C0108 TP-008 External works — tender & award |  | 15d | 2026-03-19 | 2026-04-08 | 3 | 388d | Procurement [360 h] | 132,994 |
| 5 | A0104 Key subcontractor mobilisation |  | 5d | 2026-03-19 | 2026-03-25 | 3 | 6d | Site Management [120 h] | 132,932 |
| 28 | C0101 TP-001 Earthworks & substructure — tender & award |  | 15d | 2026-03-26 | 2026-04-15 | 1 SS, 5 | 6d | Procurement [360 h] | 132,994 |
| 8 | A0107 Foundation recommendation review & bearing-capacity confirmation |  | 5d | 2026-03-26 | 2026-04-01 | 7 | 95d | Structural Design [120 h] | 66,488 |
| 11 | A0110 Blasting permit granted (permit condition 9/10 — gates eastern-third rock excavation) | milestone | 0d | 2026-04-02 | 2026-04-02 | 10 | 56d |  |  |
| 18 | B0102 Design: detailed design — S2 gate & Engineer 21-day review |  | 30d | 2026-04-09 | 2026-05-20 | 17 | 25d | Architectural Design [960 h] | 686,946 |
| 47 | D0112 LT-11 structural steel — order, fabrication & delivery (18 wk, PDC-LT-001) |  | 90d | 2026-04-09 | 2026-08-12 | 29 | 49d | Vendor (Steel Fabricator) [7200 h] | 2,127,540 |
| 48 | D0113 LT-12 precast wall panels & floor planks — order, manufacture & delivery (16 wk, PDC-LT-001) |  | 80d | 2026-04-09 | 2026-07-29 | 29 | 101d | Vendor (Precast Factory) [9600 h] | 1,201,283 |
| 50 | D0115 LT-14 BMS / DCIM hardware & licences — order, manufacture & delivery (16 wk, PDC-LT-001) |  | 80d | 2026-04-16 | 2026-08-05 | 34 | 256d | Procurement [1280 h] | 1,067,690 |
| 51 | D0116 LT-15 fire suppression systems — order, manufacture & delivery (20 wk, PDC-LT-001) |  | 100d | 2026-04-16 | 2026-09-02 | 34 | 231d | Procurement [1600 h] | 873,712 |
| 56 | E0101 Site clearance, topsoil strip & vegetation removal |  | 5d | 2026-04-16 | 2026-04-22 | 6, 12, 13, 28 | 6d | Demolition Crew [240 h] | 103,989 |
| 38 | D0103 LT-02 20 kV switchgear, protection & control — order, manufacture & delivery (38 wk, PDC-LT-001) |  | 190d | 2026-04-23 | 2027-01-13 | 33 | 0d | Procurement [3040 h] | 1,849,323 |
| 39 | D0104 LT-03 standby generators 8 x 2.5 MVA — order, manufacture & delivery (40 wk, PDC-LT-001) |  | 200d | 2026-04-23 | 2027-01-27 | 33 | 126d | Procurement [3200 h] | 2,773,621 |
| 40 | D0105 LT-04 UPS modules — order, manufacture & delivery (30 wk, PDC-LT-001) |  | 150d | 2026-04-23 | 2026-11-18 | 33 | 216d | Procurement [2400 h] | 1,618,088 |
| 41 | D0106 LT-05 battery systems — order, manufacture & delivery (24 wk, PDC-LT-001) |  | 120d | 2026-04-23 | 2026-10-07 | 33 | 246d | Procurement [1920 h] | 1,078,811 |
| 42 | D0107 LT-06 overhead busway & rack PDUs — order, manufacture & delivery (20 wk, PDC-LT-001) |  | 100d | 2026-04-23 | 2026-09-09 | 33 | 231d | Procurement [1600 h] | 693,619 |
| 43 | D0108 LT-07 chillers — order, manufacture & delivery (26 wk, PDC-LT-001) |  | 130d | 2026-04-23 | 2026-10-21 | 32 | 186d | Procurement [2080 h] | 2,676,112 |
| 44 | D0109 LT-08 dry coolers / adiabatic units — order, manufacture & delivery (22 wk, PDC-LT-001) |  | 110d | 2026-04-23 | 2026-09-23 | 32 | 206d | Procurement [1760 h] | 1,720,473 |
| 45 | D0110 LT-09 CRAH units — order, manufacture & delivery (22 wk, PDC-LT-001) |  | 110d | 2026-04-23 | 2026-09-23 | 32 | 268d | Procurement [1760 h] | 2,102,696 |
| 46 | D0111 LT-10 waste-heat recovery plant 4 MW — order, manufacture & delivery (30 wk, PDC-LT-001) |  | 150d | 2026-04-23 | 2026-11-18 | 32 | 66d | Procurement [2400 h] | 1,147,309 |
| 52 | D0117 110 kV outage window application to DNO (16 weeks' notice, PDC-GC-001 §7) |  | 5d | 2026-04-23 | 2026-04-29 | 33 | 316d | Electrical Crew [80 h] | 22,167 |
| 53 | D0118 FAT — mechanical equipment (chillers, CRAH, DH plant) witnessed |  | 5d | 2026-04-23 | 2026-04-29 | 32 | 311d | QA/QC Inspector [80 h] | 66,472 |
| 54 | D0119 FAT — electrical equipment (transformers, switchgear, UPS, gensets) witnessed |  | 5d | 2026-04-23 | 2026-04-29 | 33 | 296d | QA/QC Inspector [80 h] | 88,621 |
| 57 | E0102 Made-ground removal & disposal — NW corner provisional item (soil classification pending) |  | 5d | 2026-04-23 | 2026-04-29 | 56 | 49d | Environmental Crew [160 h] | 63,420 |
| 58 | E0103 Bulk excavation in glacial till — WEST zone (Hall 1, substation, gatehouse; no blasting) |  | 15d | 2026-04-23 | 2026-05-13 | 56 | 6d | Earthworks Crew [1920 h] | 155,186 |
| 160 | N0102 L1 — witnessed factory/site acceptance testing (HV, UPS, gensets, chillers) |  | 15d | 2026-04-30 | 2026-05-20 | 54, 53 | 311d | Commissioning Team [360 h] | 106,403 |
| 62 | E0107 Dewatering & perched-water control (till, groundwater 2.6-3.9 m) |  | 20d | 2026-04-30 | 2026-05-27 | 58 SS+5d | 41d | Civil Crew [640 h] | 223,720 |
| 63 | E0108 Utility diversions, new service trenches, water & sewer connection |  | 10d | 2026-04-30 | 2026-05-13 | 58 SS+5d | 388d | Civil Crew [960 h] | 453,540 |
| 69 | E0114 CALENDAR ALLOWANCE — Finnish public holidays 2026 (7 non-working weekdays) |  | 7d | 2026-04-30 | 2026-05-08 | 57 | 49d |  |  |
| 59 | E0104 Bulk excavation in glacial till — CENTRAL zone (Halls 2-3) |  | 15d | 2026-05-07 | 2026-05-27 | 58 SS+10d | 6d | Earthworks Crew [1920 h] | 105,600 |
| 70 | E0115 CALENDAR ALLOWANCE — summer construction shutdown 2026, weeks 28-30 (15 non-working weekdays) |  | 15d | 2026-05-11 | 2026-05-29 | 69 | 49d |  |  |
| 68 | E0113 Two diverse fibre entry routes & ducts |  | 15d | 2026-05-14 | 2026-06-03 | 63 SS+10d | 388d | ICT Crew [480 h] | 184,446 |
| 19 | B0103 Design: structural IFC package |  | 8d | 2026-05-21 | 2026-06-01 | 18 | 27d | Structural Design [192 h] | 288,007 |
| 20 | B0104 Design: mechanical IFC package (cooling, ventilation, waste-heat recovery) |  | 10d | 2026-05-21 | 2026-06-03 | 18 | 25d | MEP Design [240 h] | 265,873 |
| 21 | B0105 Design: electrical IFC package (MV/LV, protection, standby power) |  | 10d | 2026-05-21 | 2026-06-03 | 18 | 25d | MEP Design [240 h] | 288,022 |
| 22 | B0106 Design: civil & external works IFC package |  | 8d | 2026-05-21 | 2026-06-01 | 18 | 27d | Civil Design [128 h] | 132,937 |
| 23 | B0107 Design: fire safety engineering & EI120 compartmentation report |  | 10d | 2026-05-21 | 2026-06-03 | 18 | 296d | Specialist Design [160 h] | 105,267 |
| 24 | B0108 Design: acoustic & vibration analysis (blasting, gensets, cooling plant) |  | 8d | 2026-05-21 | 2026-06-01 | 18 | 218d | Specialist Design [128 h] | 72,032 |
| 60 | E0105 Bulk excavation in glacial till — EAST zone (Hall 4, generator compound) |  | 15d | 2026-05-21 | 2026-06-10 | 59 SS+10d | 6d | Earthworks Crew [1920 h] | 105,600 |
| 49 | D0114 LT-13 acoustic louvres — order, manufacture & delivery (16 wk, PDC-LT-001) |  | 80d | 2026-06-02 | 2026-09-21 | 30, 24 | 218d | Procurement [1280 h] | 308,333 |
| 25 | B0109 Design: BIM coordination & multi-discipline clash detection |  | 15d | 2026-06-04 | 2026-06-24 | 19, 20, 21, 22 | 25d | BIM Team [480 h] | 199,489 |
| 26 | B0110 Design: sustainability & energy performance verification (PUE ≤1.25, WUE ≤0.25) |  | 10d | 2026-06-04 | 2026-06-17 | 20 | 378d | Specialist Design [160 h] | 77,581 |
| 61 | E0106 Rock excavation by controlled blasting — east third, incl. vibration control (PPV 12 mm/s) |  | 25d | 2026-06-11 | 2026-07-15 | 60, 11, 9 | 6d | Rock Excavation Crew [3200 h] | 288,090 |
| 27 | B0111 Design: S3 construction issue — IFC drawings released for construction |  | 10d | 2026-06-25 | 2026-07-08 | 25 | 25d | Design Management [240 h] | 155,122 |
| 195 | E0109a Sub-base, capping & geotextile — EAST zone |  | 10d | 2026-07-16 | 2026-07-29 | 61 | 181d | Civil Crew [960 h] | 117,381 |
| 64 | E0109 Sub-base, capping & geotextile to formation — WEST & CENTRAL zones |  | 10d | 2026-07-16 | 2026-07-29 | 61, 62 | 6d | Civil Crew [960 h] | 289,609 |
| 65 | E0110 Stormwater attenuation, oil separators & discharge control (permit cond. 19/20) |  | 10d | 2026-07-23 | 2026-08-05 | 64 SS+5d, 15 | 343d | Civil Crew [320 h] | 438,980 |

Notes:
- 2: Expenses: A0101 Site possession & contract handover from Employer — Expense 93574
- 37: Expenses: D0102 LT-01 transformers — manufacture & delivery to site (residual window from Commencement; register requires delivery by 15 Jan 2027) — Expense 2172540
- 10: Expenses: A0109 Blasting permit application + pre-condition survey (Vantaa rescue authority) — Expense 33512
- 13: Expenses: A0112 Building Control commencement notice (aloitusilmoitus, ≥7 days before site works) — Expense 9835
- 14: Expenses: A0113 Statutory supervisors (vastaava työnjohtaja, KVV, IV) appointed & approved — Expense 39340
- 15: Expenses: A0114 Environmental permits, discharge consent & monitoring plan in place — Expense 18554
- 3: Expenses: A0102 Project mobilisation, BIM setup & document control — Expense 247530
- 4: Expenses: A0103 Site establishment — offices, welfare, hoarding, temporary services — Expense 448560
- 7: Expenses: A0106 Setting-out, surveying & geotechnical verification of working platform — Expense 72919
- 12: Expenses: A0111 Archaeological watching brief — site clearance phase, NW corner — Expense 30390
- 6: Expenses: A0105 Site access road & one-way haul route from Tikkurilantie + wheel-wash — Expense 178298
- 9: Expenses: A0108 Vibration & noise monitoring; pre-condition survey of neighbours (permit cond. 9/11/12) — Expense 44575
- 16: Expenses: A0115 Winter construction methodology & cold-weather strategy — Expense 25367
- 17: Expenses: B0101 Design: concept design consolidation — S1 gate & Engineer 14-day review — Expense 286798
- 29: Expenses: C0102 TP-002 Structure (steel & precast) — tender & award — Expense 137419
- 30: Expenses: C0103 TP-003 Envelope — tender & award — Expense 116776
- 31: Expenses: C0104 TP-004 Architectural & containment — tender & award — Expense 93119
- 32: Expenses: C0105 TP-005 Mechanical — tender & award — Expense 240107
- 33: Expenses: C0106 TP-006 Electrical — tender & award — Expense 284406
- 34: Expenses: C0107 TP-007 ELV / BMS / fire — tender & award — Expense 127851
- 35: Expenses: C0108 TP-008 External works — tender & award — Expense 104194
- 5: Expenses: A0104 Key subcontractor mobilisation — Expense 122732
- 28: Expenses: C0101 TP-001 Earthworks & substructure — tender & award — Expense 104194
- 8: Expenses: A0107 Foundation recommendation review & bearing-capacity confirmation — Expense 55088
- 18: Expenses: B0102 Design: detailed design — S2 gate & Engineer 21-day review — Expense 595746
- 47: Expenses: D0112 LT-11 structural steel — order, fabrication & delivery (18 wk, PDC-LT-001) — Expense 1623540
- 48: Expenses: D0113 LT-12 precast wall panels & floor planks — order, manufacture & delivery (16 wk, PDC-LT-001) — Expense 577283
- 50: Expenses: D0115 LT-14 BMS / DCIM hardware & licences — order, manufacture & delivery (16 wk, PDC-LT-001) — Expense 965290
- 51: Expenses: D0116 LT-15 fire suppression systems — order, manufacture & delivery (20 wk, PDC-LT-001) — Expense 745712
- 56: Expenses: E0101 Site clearance, topsoil strip & vegetation removal — Expense 92469
- 38: Expenses: D0103 LT-02 20 kV switchgear, protection & control — order, manufacture & delivery (38 wk, PDC-LT-001) — Expense 1606123
- 39: Expenses: D0104 LT-03 standby generators 8 x 2.5 MVA — order, manufacture & delivery (40 wk, PDC-LT-001) — Expense 2517621
- 40: Expenses: D0105 LT-04 UPS modules — order, manufacture & delivery (30 wk, PDC-LT-001) — Expense 1426088
- 41: Expenses: D0106 LT-05 battery systems — order, manufacture & delivery (24 wk, PDC-LT-001) — Expense 925211
- 42: Expenses: D0107 LT-06 overhead busway & rack PDUs — order, manufacture & delivery (20 wk, PDC-LT-001) — Expense 565619
- 43: Expenses: D0108 LT-07 chillers — order, manufacture & delivery (26 wk, PDC-LT-001) — Expense 2509712
- 44: Expenses: D0109 LT-08 dry coolers / adiabatic units — order, manufacture & delivery (22 wk, PDC-LT-001) — Expense 1579673
- 45: Expenses: D0110 LT-09 CRAH units — order, manufacture & delivery (22 wk, PDC-LT-001) — Expense 1961896
- 46: Expenses: D0111 LT-10 waste-heat recovery plant 4 MW — order, manufacture & delivery (30 wk, PDC-LT-001) — Expense 955309
- 52: Expenses: D0117 110 kV outage window application to DNO (16 weeks' notice, PDC-GC-001 §7) — Expense 17047
- 53: Expenses: D0118 FAT — mechanical equipment (chillers, CRAH, DH plant) witnessed — Expense 59672
- 54: Expenses: D0119 FAT — electrical equipment (transformers, switchgear, UPS, gensets) witnessed — Expense 81821
- 57: Expenses: E0102 Made-ground removal & disposal — NW corner provisional item (soil classification pending) — Expense 55100
- 58: Expenses: E0103 Bulk excavation in glacial till — WEST zone (Hall 1, substation, gatehouse; no blasting) — Expense 49586
- 160: Expenses: N0102 L1 — witnessed factory/site acceptance testing (HV, UPS, gensets, chillers) — Expense 74723
- 62: Expenses: E0107 Dewatering & perched-water control (till, groundwater 2.6-3.9 m) — Expense 188520
- 63: Expenses: E0108 Utility diversions, new service trenches, water & sewer connection — Expense 400740
- 68: Expenses: E0113 Two diverse fibre entry routes & ducts — Expense 154686
- 19: Expenses: B0103 Design: structural IFC package — Expense 269767
- 20: Expenses: B0104 Design: mechanical IFC package (cooling, ventilation, waste-heat recovery) — Expense 243073
- 21: Expenses: B0105 Design: electrical IFC package (MV/LV, protection, standby power) — Expense 265222
- 22: Expenses: B0106 Design: civil & external works IFC package — Expense 121417
- 23: Expenses: B0107 Design: fire safety engineering & EI120 compartmentation report — Expense 88467
- 24: Expenses: B0108 Design: acoustic & vibration analysis (blasting, gensets, cooling plant) — Expense 58592
- 49: Expenses: D0114 LT-13 acoustic louvres — order, manufacture & delivery (16 wk, PDC-LT-001) — Expense 205933
- 25: Expenses: B0109 Design: BIM coordination & multi-discipline clash detection — Expense 157249
- 26: Expenses: B0110 Design: sustainability & energy performance verification (PUE ≤1.25, WUE ≤0.25) — Expense 60781
- 61: Expenses: E0106 Rock excavation by controlled blasting — east third, incl. vibration control (PPV 12 mm/s) — Expense 89690
- 27: Expenses: B0111 Design: S3 construction issue — IFC drawings released for construction — Expense 133042
- 195: Expenses: E0109a Sub-base, capping & geotextile — EAST zone — Expense 64581
- 64: Expenses: E0109 Sub-base, capping & geotextile to formation — WEST & CENTRAL zones — Expense 236809
- 65: Expenses: E0110 Stormwater attenuation, oil separators & discharge control (permit cond. 19/20) — Expense 421380

| ID | Activity | Duration | Start | Finish | Predecessors | Total float | Resources | Cost |
| --- | --- | --- | --- | --- | --- | --- | --- | --- |
| 66 | E0111 Site roads, hardstanding & service yard (phased west to east) | 20d | 2026-07-23 | 2026-08-19 | 64 SS+5d | 241d | Civil Crew [960 h] | 541,324 |
| 71 | F0101 Formation level preparation & blinding — WEST zone | 4d | 2026-07-30 | 2026-08-04 | 64, 70 | 6d | Civil Crew [128 h] | 52,457 |
| 72 | F0102 Formation level preparation & blinding — CENTRAL zone | 4d | 2026-07-30 | 2026-08-04 | 64, 70 | 6d | Civil Crew [128 h] | 43,204 |
| 73 | F0103 Formation level preparation & blinding — EAST zone (rock) | 4d | 2026-07-30 | 2026-08-04 | 195, 70 | 181d | Civil Crew [128 h] | 40,120 |
| 74 | F0104 RC pad & strip foundations bearing on till — WEST zone (Hall 1, gatehouse) | 22d | 2026-08-05 | 2026-09-03 | 71, 8, 27 | 6d | Concrete Crew [2816 h] | 549,539 |
| 75 | F0105 RC pad foundations bearing on till — CENTRAL zone (Halls 2-3) | 22d | 2026-08-05 | 2026-09-03 | 72, 8 | 6d | Concrete Crew [2816 h] | 481,685 |
| 76 | F0106 Direct-to-rock & rock-socketed foundations — EAST zone (Hall 4, generator compound) | 28d | 2026-08-05 | 2026-09-11 | 73, 8 | 181d | Piling Crew [2688 h] | 395,406 |
| 67 | E0112 Perimeter fencing, gate detection & vehicle gates | 15d | 2026-08-06 | 2026-08-26 | 66 SS+10d | 288d | Civil Crew [480 h] | 291,723 |
| 55 | D0120 TPI — structural steel & precast third-party inspection | 5d | 2026-08-13 | 2026-08-19 | 47, 48 | 91d | QA/QC Inspector [80 h] | 44,322 |
| 141 | J0116 External lighting, security lighting & small power | 12d | 2026-08-20 | 2026-09-04 | 66 | 296d | Electrical Crew [288 h] | 932,076 |
| 77 | F0107 Ground beams, pile caps & edge beam — all zones | 15d | 2026-09-04 | 2026-09-24 | 74, 75 | 6d | Concrete Crew [1920 h] | 382,818 |
| 83 | F0113 Waterproofing & tanking — substation cable basement & pits | 8d | 2026-09-11 | 2026-09-22 | 77 SS+5d | 61d | Waterproofing Crew [256 h] | 74,069 |
| 196 | F0107a Ground beams & pile caps — EAST zone | 15d | 2026-09-14 | 2026-10-02 | 76 | 181d | Concrete Crew [1920 h] | 123,733 |
| 113 | I0103 Cooling yard — dry coolers / adiabatic units (10 nr) install & connections | 15d | 2026-09-24 | 2026-10-14 | 66 SS+10d, 44 | 206d | Mechanical Crew [480 h] | 1,720,103 |
| 78 | F0108 Ground-bearing slab 250 mm, FM2 flatness — Hall 1 & substation | 15d | 2026-09-25 | 2026-10-15 | 77 | 50d | Concrete Crew [1920 h] | 259,444 |
| 79 | F0109 Ground-bearing slab — shared MEP spine & cooling yard plinths | 12d | 2026-09-25 | 2026-10-12 | 77 | 6d | Concrete Crew [1536 h] | 191,517 |
| 80 | F0110 Ground-bearing slab 25 kN/m2 — Hall 2 | 12d | 2026-09-25 | 2026-10-12 | 77 | 116d | Concrete Crew [1536 h] | 173,011 |
| 81 | F0111 Ground-bearing slab 25 kN/m2 — Hall 3 | 12d | 2026-09-25 | 2026-10-12 | 77 | 187d | Concrete Crew [1536 h] | 173,011 |
| 82 | F0112 Ground-bearing slab — Hall 4 & generator compound | 12d | 2026-10-05 | 2026-10-20 | 196 | 181d | Concrete Crew [1536 h] | 185,348 |
| 111 | I0101 Shared cooling spine — chilled-water pipework, pumps, headers & 10 MW ring | 30d | 2026-10-13 | 2026-11-23 | 79 | 57d | Mechanical Crew [2880 h] | 1,577,265 |
| 123 | I0113 Sanitary, drainage & domestic water installation | 25d | 2026-10-13 | 2026-11-16 | 79 | 183d | Plumbing Crew [2400 h] | 363,576 |
| 85 | G0102 Structural steel frame erection — Hall 2 | 18d | 2026-10-13 | 2026-11-05 | 80, 47 | 116d | Structural Steel Crew [2880 h] | 491,216 |
| 86 | G0103 Structural steel frame erection — Hall 3 | 18d | 2026-10-13 | 2026-11-05 | 81, 47 | 187d | Structural Steel Crew [2880 h] | 491,216 |
| 88 | G0105 Structural steel frame — MEP spine, primary substation, generator hall & admin/NOC | 25d | 2026-10-13 | 2026-11-16 | 79, 47 | 6d | Structural Steel Crew [4000 h] | 627,736 |
| 84 | G0101 Structural steel frame erection — Hall 1 (clear-span lattice trusses) | 20d | 2026-10-16 | 2026-11-12 | 78, 55 | 50d | Structural Steel Crew [3200 h] | 518,542 |
| 135 | J0110 Bulk fuel storage, bunding, polishing & day tanks (48 h autonomy) incl. oil separator | 18d | 2026-10-21 | 2026-11-13 | 82, 65 | 289d | Civil Crew [576 h] | 400,616 |
| 87 | G0104 Structural steel frame erection — Hall 4 | 18d | 2026-10-21 | 2026-11-13 | 82, 47 | 181d | Structural Steel Crew [2880 h] | 480,315 |
| 112 | I0102 Cooling yard — chillers (4 nr) install, pipework & electrical connections | 15d | 2026-10-22 | 2026-11-11 | 66 SS+10d, 43, 53 | 186d | Mechanical Crew [480 h] | 2,675,660 |
| 197 | G0112a Metal deck, roof purlins & side rails — Hall 3 | 12d | 2026-11-06 | 2026-11-23 | 86 | 187d | Structural Steel Crew [1152 h] | 163,781 |
| 90 | G0107 Precast wall panels (EI120) — Hall 2 | 12d | 2026-11-06 | 2026-11-23 | 85, 48 | 157d | Steel & Precast Crew [1152 h] | 245,529 |
| 91 | G0108 Precast wall panels (EI120) — Hall 3 | 12d | 2026-11-06 | 2026-11-23 | 86, 48 | 245d | Steel & Precast Crew [1152 h] | 245,529 |
| 95 | G0112 Metal deck, roof purlins & side rails — Halls 2-4 (rolling front) | 24d | 2026-11-06 | 2026-12-09 | 85 | 116d | Structural Steel Crew [2304 h] | 338,464 |
| 121 | I0111 Water treatment, adiabatic make-up, dosing & legionella control | 15d | 2026-11-12 | 2026-12-02 | 112, 113 | 186d | Plumbing Crew [480 h] | 248,537 |
| 89 | G0106 Precast wall panels (EI120 between halls) — Hall 1 | 14d | 2026-11-13 | 2026-12-02 | 84 | 50d | Steel & Precast Crew [1344 h] | 261,922 |
| 94 | G0111 Metal deck, roof purlins & side rails — Hall 1 | 12d | 2026-11-13 | 2026-11-30 | 84 | 121d | Structural Steel Crew [1152 h] | 141,977 |
| 98 | G0115 Steel frame inspection, bolted connection QA & dimensional survey | 5d | 2026-11-13 | 2026-11-19 | 84 | 142d | QA/QC Inspector [80 h] | 16,375 |
| 99 | G0116 Cold-weather curing monitoring & winter protection (Dec-Mar productivity allowance) | 25d | 2026-11-13 | 2026-12-17 | 84, 16 | 148d | Winter Protection Crew [600 h] | 98,217 |
| 198 | G0112b Metal deck, roof purlins & side rails — Hall 4 | 12d | 2026-11-16 | 2026-12-01 | 87 | 181d | Structural Steel Crew [1152 h] | 163,781 |
| 92 | G0109 Precast wall panels (EI120) — Hall 4 | 12d | 2026-11-16 | 2026-12-01 | 87, 48 | 239d | Steel & Precast Crew [1152 h] | 240,079 |
| 93 | G0110 Precast & in-situ works — spine, substation, generator hall & admin/NOC | 20d | 2026-11-17 | 2026-12-14 | 88, 48 | 30d | Steel & Precast Crew [1920 h] | 414,667 |
| 96 | G0113 Metal deck, purlins & standing-seam substrate — spine, substation, gens & admin/NOC | 16d | 2026-11-17 | 2026-12-08 | 88 | 6d | Structural Steel Crew [1536 h] | 185,669 |
| 104 | H0105 Rainscreen cladding system (U=0.17) — Halls 2-4 | 36d | 2026-11-24 | 2027-01-12 | 90 | 157d | Facade Crew [4608 h] | 1,262,189 |
| 190 | I0116 Hall 2 — CRAH units, chilled-water distribution & ventilation | 30d | 2026-11-24 | 2027-01-04 | 111 | 82d | Mechanical Crew [2880 h] | 956,153 |
| 199 | H0102a Warm roof build-up (PIR, U=0.09) — Hall 3 | 15d | 2026-11-24 | 2026-12-14 | 197 | 187d | Waterproofing Crew [480 h] | 176,078 |
| 201 | H0105a Rainscreen cladding system (U=0.17) — Hall 3 | 18d | 2026-11-24 | 2026-12-17 | 91 | 245d | Facade Crew [2304 h] | 418,434 |
| 100 | H0101 Warm roof build-up (PIR, U=0.09) — Hall 1, spine & substation — WEATHERTIGHT | 15d | 2026-12-01 | 2026-12-21 | 94 | 121d | Waterproofing Crew [480 h] | 278,742 |
| 200 | H0102b Warm roof build-up (PIR, U=0.09) — Hall 4 | 15d | 2026-12-02 | 2026-12-22 | 198 | 181d | Waterproofing Crew [480 h] | 176,078 |
| 202 | H0105b Rainscreen cladding system (U=0.17) — Hall 4 | 18d | 2026-12-02 | 2026-12-25 | 92 | 239d | Facade Crew [2304 h] | 418,434 |
| 103 | H0104 Rainscreen cladding system (U=0.17) — Hall 1 | 18d | 2026-12-03 | 2026-12-28 | 89, 94, 98 | 133d | Facade Crew [2304 h] | 455,099 |
| 126 | J0101 Primary substation — building fit-out, earthing, cable basement & SCADA room | 20d | 2026-12-09 | 2027-01-05 | 83, 96 | 6d | Electrical Crew [1920 h] | 477,942 |
| 97 | G0114 Intumescent & cementitious fire protection to steel (EI120) | 18d | 2026-12-09 | 2027-01-01 | 94, 96, 23 | 162d | Fire Protection Crew [864 h] | 305,419 |
| 101 | H0102 Warm roof build-up (PIR, U=0.09) — Halls 2-4 | 30d | 2026-12-10 | 2027-01-20 | 95 | 116d | Waterproofing Crew [960 h] | 528,152 |
| 105 | H0106 Cladding & glazing — spine, substation, generator hall & admin/NOC | 18d | 2026-12-15 | 2027-01-07 | 93, 96 | 30d | Facade Crew [2304 h] | 381,769 |
| 155 | L0108 Gatehouse fit-out, weighbridge & vehicle screening | 15d | 2026-12-15 | 2027-01-04 | 93, 67, 35 | 210d | Fit-Out Crew [480 h] | 282,000 |
| 108 | H0109 Rainwater goods, syphonic outlets & below-ground drainage | 12d | 2026-12-22 | 2027-01-06 | 100 | 153d | Plumbing Crew [384 h] | 132,071 |
| 114 | I0104 Hall 1 — CRAH units (7 nr) install, plinths, pipework & connections | 15d | 2026-12-22 | 2027-01-11 | 100, 45 | 205d | Mechanical Crew [720 h] | 592,594 |
| 116 | I0106 Hall 1 — ventilation, smoke extract & plant-room pressurisation ductwork | 20d | 2026-12-22 | 2027-01-18 | 100, 111 | 133d | Mechanical Crew [1920 h] | 497,287 |
| 148 | L0101 Hall 1 — floor screed & sealed antistatic finish (FM2, 25 kN/m2) | 12d | 2026-12-22 | 2027-01-06 | 100, 31, 99 SS | 121d | Fit-Out Crew [576 h] | 322,291 |
| 204 | H0109a Rainwater goods & syphonic drainage — Halls 3-4 | 12d | 2026-12-23 | 2027-01-07 | 199 SS+15d, 200 SS+15d | 244d | Plumbing Crew [384 h] | 88,072 |
| 203 | H0108a Personnel & equipment doors — Halls 3-4 | 15d | 2026-12-30 | 2027-01-19 | 201 SS+20d, 202 SS+20d | 239d | Facade Crew [480 h] | 146,755 |
| 139 | J0114 Earthing, bonding, equipotential mesh & lightning protection | 15d | 2027-01-06 | 2027-01-26 | 126 | 147d | Electrical Crew [360 h] | 200,333 |
| 149 | L0102 Hall 1 — cold-aisle containment framework, doors & blanking panels | 20d | 2027-01-07 | 2027-02-03 | 148 | 121d | Fit-Out Crew [2560 h] | 510,591 |
| 106 | H0107 Acoustic louvres & attenuators to cooling intake/discharge (generator test 09-16 h) | 15d | 2027-01-08 | 2027-01-28 | 103, 105, 49 | 140d | Facade Crew [1440 h] | 308,270 |
| 107 | H0108 Personnel & equipment doors incl. 3.0 x 3.5 m (plant access for modules) | 15d | 2027-01-08 | 2027-01-28 | 103, 105 | 125d | Facade Crew [480 h] | 190,754 |
| 118 | I0108 Waste-heat recovery plant (4 MWth) install, heat exchangers & controls | 20d | 2027-01-08 | 2027-02-04 | 46, 111, 105 | 30d | Mechanical Crew [960 h] | 1,146,867 |
| 150 | L0103 Internal partitions, linings & fire-rated boarding — spine, substation & admin/NOC | 20d | 2027-01-08 | 2027-02-04 | 105, 123 SS | 120d | Fit-Out Crew [3200 h] | 604,677 |
| 154 | L0107 Admin/NOC block fit-out — joinery, ceilings, finishes, sanitary & FF&E | 35d | 2027-01-08 | 2027-02-25 | 105 | 170d | Fit-Out Crew [4480 h] | 833,124 |
| 115 | I0105 Hall 1 — chilled-water distribution, valves, flow meters & commissioning sets | 25d | 2027-01-12 | 2027-02-15 | 111, 114 | 205d | Mechanical Crew [2400 h] | 745,831 |
| 130 | J0105 Site 20 kV ring main switchboard, protection relays & site HV cabling | 20d | 2027-01-14 | 2027-02-10 | 126, 38 | 0d | Electrical Crew [1920 h] | 1,848,922 |
| 127 | J0102 110/20 kV transformers (2 x 16 MVA) — install, connect, oil & cooling commissioning | 20d | 2027-01-15 | 2027-02-11 | 126, 37, 54 | 110d | Electrical Crew [1920 h] | 1,155,730 |

Notes:
- 66: Expenses: E0111 Site roads, hardstanding & service yard (phased west to east) — Expense 488524
- 71: Expenses: F0101 Formation level preparation & blinding — WEST zone — Expense 45417
- 72: Expenses: F0102 Formation level preparation & blinding — CENTRAL zone — Expense 36164
- 73: Expenses: F0103 Formation level preparation & blinding — EAST zone (rock) — Expense 33080
- 74: Expenses: F0104 RC pad & strip foundations bearing on till — WEST zone (Hall 1, gatehouse) — Expense 391843
- 75: Expenses: F0105 RC pad foundations bearing on till — CENTRAL zone (Halls 2-3) — Expense 323989
- 76: Expenses: F0106 Direct-to-rock & rock-socketed foundations — EAST zone (Hall 4, generator compound) — Expense 212622
- 67: Expenses: E0112 Perimeter fencing, gate detection & vehicle gates — Expense 265323
- 55: Expenses: D0120 TPI — structural steel & precast third-party inspection — Expense 37522
- 141: Expenses: J0116 External lighting, security lighting & small power — Expense 913644
- 77: Expenses: F0107 Ground beams, pile caps & edge beam — all zones — Expense 275298
- 83: Expenses: F0113 Waterproofing & tanking — substation cable basement & pits — Expense 60757
- 196: Expenses: F0107a Ground beams & pile caps — EAST zone — Expense 16213
- 113: Expenses: I0103 Cooling yard — dry coolers / adiabatic units (10 nr) install & connections — Expense 1690343
- 78: Expenses: F0108 Ground-bearing slab 250 mm, FM2 flatness — Hall 1 & substation — Expense 151924
- 79: Expenses: F0109 Ground-bearing slab — shared MEP spine & cooling yard plinths — Expense 105501
- 80: Expenses: F0110 Ground-bearing slab 25 kN/m2 — Hall 2 — Expense 86995
- 81: Expenses: F0111 Ground-bearing slab 25 kN/m2 — Hall 3 — Expense 86995
- 82: Expenses: F0112 Ground-bearing slab — Hall 4 & generator compound — Expense 99332
- 111: Expenses: I0101 Shared cooling spine — chilled-water pipework, pumps, headers & 10 MW ring — Expense 1398705
- 123: Expenses: I0113 Sanitary, drainage & domestic water installation — Expense 224376
- 85: Expenses: G0102 Structural steel frame erection — Hall 2 — Expense 301136
- 86: Expenses: G0103 Structural steel frame erection — Hall 3 — Expense 301136
- 88: Expenses: G0105 Structural steel frame — MEP spine, primary substation, generator hall & admin/NOC — Expense 363736
- 84: Expenses: G0101 Structural steel frame erection — Hall 1 (clear-span lattice trusses) — Expense 307342
- 135: Expenses: J0110 Bulk fuel storage, bunding, polishing & day tanks (48 h autonomy) incl. oil separator — Expense 368936
- 87: Expenses: G0104 Structural steel frame erection — Hall 4 — Expense 290235
- 112: Expenses: I0102 Cooling yard — chillers (4 nr) install, pipework & electrical connections — Expense 2645900
- 197: Expenses: G0112a Metal deck, roof purlins & side rails — Hall 3 — Expense 87749
- 90: Expenses: G0107 Precast wall panels (EI120) — Hall 2 — Expense 174105
- 91: Expenses: G0108 Precast wall panels (EI120) — Hall 3 — Expense 174105
- 95: Expenses: G0112 Metal deck, roof purlins & side rails — Halls 2-4 (rolling front) — Expense 186400
- 121: Expenses: I0111 Water treatment, adiabatic make-up, dosing & legionella control — Expense 220697
- 89: Expenses: G0106 Precast wall panels (EI120 between halls) — Hall 1 — Expense 178594
- 94: Expenses: G0111 Metal deck, roof purlins & side rails — Hall 1 — Expense 65945
- 98: Expenses: G0115 Steel frame inspection, bolted connection QA & dimensional survey — Expense 9575
- 99: Expenses: G0116 Cold-weather curing monitoring & winter protection (Dec-Mar productivity allowance) — Expense 68217
- 198: Expenses: G0112b Metal deck, roof purlins & side rails — Hall 4 — Expense 87749
- 92: Expenses: G0109 Precast wall panels (EI120) — Hall 4 — Expense 168655
- 93: Expenses: G0110 Precast & in-situ works — spine, substation, generator hall & admin/NOC — Expense 295627
- 96: Expenses: G0113 Metal deck, purlins & standing-seam substrate — spine, substation, gens & admin/NOC — Expense 84293
- 104: Expenses: H0105 Rainscreen cladding system (U=0.17) — Halls 2-4 — Expense 994925
- 190: Expenses: I0116 Hall 2 — CRAH units, chilled-water distribution & ventilation — Expense 777593
- 199: Expenses: H0102a Warm roof build-up (PIR, U=0.09) — Hall 3 — Expense 151118
- 201: Expenses: H0105a Rainscreen cladding system (U=0.17) — Hall 3 — Expense 284802
- 100: Expenses: H0101 Warm roof build-up (PIR, U=0.09) — Hall 1, spine & substation — WEATHERTIGHT — Expense 253782
- 200: Expenses: H0102b Warm roof build-up (PIR, U=0.09) — Hall 4 — Expense 151118
- 202: Expenses: H0105b Rainscreen cladding system (U=0.17) — Hall 4 — Expense 284802
- 103: Expenses: H0104 Rainscreen cladding system (U=0.17) — Hall 1 — Expense 321467
- 126: Expenses: J0101 Primary substation — building fit-out, earthing, cable basement & SCADA room — Expense 355062
- 97: Expenses: G0114 Intumescent & cementitious fire protection to steel (EI120) — Expense 255307
- 101: Expenses: H0102 Warm roof build-up (PIR, U=0.09) — Halls 2-4 — Expense 478232
- 105: Expenses: H0106 Cladding & glazing — spine, substation, generator hall & admin/NOC — Expense 248137
- 155: Expenses: L0108 Gatehouse fit-out, weighbridge & vehicle screening — Expense 256080
- 108: Expenses: H0109 Rainwater goods, syphonic outlets & below-ground drainage — Expense 109799
- 114: Expenses: I0104 Hall 1 — CRAH units (7 nr) install, plinths, pipework & connections — Expense 547954
- 116: Expenses: I0106 Hall 1 — ventilation, smoke extract & plant-room pressurisation ductwork — Expense 378247
- 148: Expenses: L0101 Hall 1 — floor screed & sealed antistatic finish (FM2, 25 kN/m2) — Expense 291187
- 204: Expenses: H0109a Rainwater goods & syphonic drainage — Halls 3-4 — Expense 65800
- 203: Expenses: H0108a Personnel & equipment doors — Halls 3-4 — Expense 118915
- 139: Expenses: J0114 Earthing, bonding, equipotential mesh & lightning protection — Expense 177293
- 149: Expenses: L0102 Hall 1 — cold-aisle containment framework, doors & blanking panels — Expense 372351
- 106: Expenses: H0107 Acoustic louvres & attenuators to cooling intake/discharge (generator test 09-16 h) — Expense 224750
- 107: Expenses: H0108 Personnel & equipment doors incl. 3.0 x 3.5 m (plant access for modules) — Expense 162914
- 118: Expenses: I0108 Waste-heat recovery plant (4 MWth) install, heat exchangers & controls — Expense 1087347
- 150: Expenses: L0103 Internal partitions, linings & fire-rated boarding — spine, substation & admin/NOC — Expense 431877
- 154: Expenses: L0107 Admin/NOC block fit-out — joinery, ceilings, finishes, sanitary & FF&E — Expense 591204
- 115: Expenses: I0105 Hall 1 — chilled-water distribution, valves, flow meters & commissioning sets — Expense 597031
- 130: Expenses: J0105 Site 20 kV ring main switchboard, protection relays & site HV cabling — Expense 1726042
- 127: Expenses: J0102 110/20 kV transformers (2 x 16 MVA) — install, connect, oil & cooling commissioning — Expense 1032850

| ID | Activity | Type | Duration | Start | Finish | Predecessors | Total float | Resources | Cost |
| --- | --- | --- | --- | --- | --- | --- | --- | --- | --- |
| 102 | H0103 Roof penetrations, flashings, PV plinths & edge details |  | 8d | 2027-01-21 | 2027-02-01 | 100, 101 | 215d | Waterproofing Crew [192 h] | 102,697 |
| 191 | I0117 Hall 3 — CRAH units, chilled-water distribution & ventilation |  | 30d | 2027-01-26 | 2027-03-08 | 190 SS+45d | 82d | Mechanical Crew [2880 h] | 956,153 |
| 133 | J0108 Standby generation — 8 x 2.5 MVA gensets, acoustic enclosures & power cabling |  | 25d | 2027-01-28 | 2027-03-03 | 82, 96, 39 | 126d | Electrical Crew [3200 h] | 2,773,450 |
| 109 | H0110 Airtightness works & testing to q50 <= 1.0 m3/h/m2 |  | 12d | 2027-01-29 | 2027-02-15 | 104, 107 | 145d | Commissioning Team [192 h] | 88,054 |
| 124 | I0114 Sprinkler installation & dry risers — ancillary, spine & admin/NOC |  | 20d | 2027-01-29 | 2027-02-25 | 107 | 217d | Fire Protection Crew [1920 h] | 401,705 |
| 110 | H0111 Roof safety lines, walkways & access hatches |  | 10d | 2027-02-02 | 2027-02-15 | 102 | 215d | Structural Steel Crew [320 h] | 69,735 |
| 119 | I0109 Heat-recovery pipework, flow metering & DH boundary chamber tie-in |  | 15d | 2027-02-05 | 2027-02-25 | 118 | 30d | Civil Crew [480 h] | 458,755 |
| 159 | N0101 Pre-commissioning walkdowns & punch list — Section 1 |  | 5d | 2027-02-05 | 2027-02-11 | 149, 116, 150 | 120d | Commissioning Team [160 h] | 62,859 |
| 131 | J0106 Hall 1 substation 20/0.4 kV, protection & sub-main cabling |  | 15d | 2027-02-11 | 2027-03-03 | 130 | 111d | Electrical Crew [1440 h] | 601,074 |
| 187 | J0112 Hall 2 — substation 20/0.4 kV, UPS, batteries, LV boards & busway |  | 25d | 2027-02-11 | 2027-03-17 | 130, 111, 89 | 0d | Electrical Crew [2400 h] | 1,232,853 |
| 128 | J0103 110 kV termination, GIS, metering & protection — install, prove & witness |  | 15d | 2027-02-12 | 2027-03-04 | 127, 52 | 110d | Electrical Crew [1440 h] | 554,861 |
| 122 | I0112 Mechanical insulation — chilled-water pipework & ductwork |  | 25d | 2027-02-16 | 2027-03-22 | 115 | 205d | Insulation Crew [800 h] | 325,029 |
| 138 | J0113 Containment, power cabling, small power & lighting — all halls |  | 40d | 2027-02-18 | 2027-04-14 | 107, 131 SS+5d, 97 SS | 111d | Electrical Crew [5120 h] | 1,464,498 |
| 144 | K0103 Fire detection & alarm — all areas incl. aspirating detection to white space |  | 20d | 2027-02-18 | 2027-03-17 | 138 SS, 106 SS | 111d | Electrical Crew [1280 h] | 504,838 |
| 193 | I0120 Inert-gas / water-mist suppression — Hall 1 & shared plant |  | 20d | 2027-02-18 | 2027-03-17 | 138 SS, 51, 108 SS | 111d | Fire Protection Crew [1920 h] | 430,372 |
| 136 | J0111 Hall 1 — LV main switchboards, distribution boards & overhead busway to PDUs |  | 20d | 2027-02-23 | 2027-03-22 | 131 SS+8d, 42 | 113d | Electrical Crew [1920 h] | 1,040,197 |
| 142 | K0101 BMS field devices, control panels, I/O & BACnet/IP integration — site-wide |  | 15d | 2027-02-23 | 2027-03-15 | 50, 136 SS | 113d | BMS Crew [480 h] | 873,397 |
| 161 | N0103 L2/L3 — static inspection & component start-up — Section 1 |  | 15d | 2027-02-23 | 2027-03-15 | 159, 160, 142 SS, 121 SS, 139 SS | 113d | Commissioning Team [480 h] | 149,923 |
| 157 | M0102 Landscaping, tree replacement (2:1) & permanent access (permit cond. 21/22) |  | 25d | 2027-02-26 | 2027-04-01 | 141, 155, 154 | 172d | Landscaping Crew [800 h] | 2,751,780 |
| 205 | Z0003a DH boundary chamber & Offtaker connection works (MS-16 = 31 Aug 2027) |  | 112d | 2027-02-26 | 2027-08-02 | 119 | 30d | Civil Crew [3584 h] | 197,120 |
| 132 | J0107 Hall 1 — UPS modules (4 x 1.0 MVA, N+1) & battery systems install |  | 15d | 2027-03-04 | 2027-03-24 | 131, 40, 41 | 141d | Electrical Crew [1440 h] | 1,617,755 |
| 134 | J0109 Generator paralleling switchboard, ATS, black-start & control system |  | 15d | 2027-03-04 | 2027-03-24 | 133, 130 | 126d | Electrical Crew [720 h] | 493,090 |
| 129 | J0104 DNO 110 kV connection works, protection proving & energisation (outage window) |  | 8d | 2027-03-05 | 2027-03-16 | 128 | 110d | Electrical Crew [768 h] | 693,356 |
| 143 | K0102 DCIM — per-hall power, cooling & environmental reporting |  | 15d | 2027-03-16 | 2027-04-05 | 142 | 185d | BMS Crew [480 h] | 368,832 |
| 162 | N0104 MS: GRID ENERGISATION — Section 1 (DNO; earliest 2027-03-12 per PDC-GC-001) | milestone | 0d | 2027-03-17 | 2027-03-17 | 129, 130 | 110d |  |  |
| 206 | X0103 CALENDAR ALLOWANCE — Finnish public holidays inside the Section 1 commissioning window (Fri 26 & Mon 29 Mar 2027) — 2 non-working wd |  | 2d | 2027-03-17 | 2027-03-18 | 162 | 110d |  |  |
| 151 | L0104 Hall 2 — floor finish, cold-aisle containment & white-space fit-out |  | 25d | 2027-03-18 | 2027-04-21 | 101, 187, 190 | 76d | Fit-Out Crew [3200 h] | 644,951 |
| 163 | N0105 Section 1 — L4 integrated systems testing & failure-mode demonstrations |  | 20d | 2027-03-19 | 2027-04-15 | 161, 144, 193, 142, 206, 109 SS | 110d | Commissioning Team [1600 h] | 232,388 |
| 192 | I0118 Hall 4 — CRAH units, chilled-water distribution & ventilation |  | 30d | 2027-03-30 | 2027-05-10 | 191 SS+45d | 82d | Mechanical Crew [2880 h] | 937,042 |
| 145 | K0104 Access control — five security layers, mantrap & ANPR |  | 20d | 2027-04-15 | 2027-05-12 | 138 | 143d | Electrical Crew [640 h] | 465,888 |
| 147 | K0106 Structured cabling, meet-me room, cross-connects & diverse fibre entries |  | 20d | 2027-04-15 | 2027-05-12 | 138, 68 | 163d | ICT Crew [640 h] | 601,728 |
| 164 | N0106 Section 1 — L5 integrated load-bank testing (24 h at full IT load) |  | 5d | 2027-04-16 | 2027-04-22 | 163, 134, 132 SS | 110d | Commissioning Team [160 h] | 106,344 |
| 168 | N0201 Section 2 — L2/L3 static inspection & component start-up |  | 15d | 2027-04-22 | 2027-05-12 | 151 | 76d | Commissioning Team [480 h] | 135,428 |
| 194 | I0121 Inert-gas / water-mist suppression — Halls 2-4 |  | 25d | 2027-04-22 | 2027-05-26 | 193 SS+45d | 133d | Fire Protection Crew [2400 h] | 430,465 |
| 165 | N0107 Section 1 — statutory & occupancy inspection (käyttöönottotarkastus) |  | 3d | 2027-04-23 | 2027-04-27 | 164, 14 | 110d | Site Management [48 h] | 29,004 |
| 166 | N0108 MS: Tenant technical acceptance — Data Hall 1 | milestone | 0d | 2027-04-28 | 2027-04-28 | 165 | 110d |  |  |
| 167 | Z0001 MS: SECTION 1 TAKING OVER (Contract Month 14 = 02 May 2027; LD EUR 18,000/day) | milestone | 0d | 2027-04-28 | 2027-04-28 | 166 | 110d |  |  |
| 146 | K0105 CCTV — 90-day retention, perimeter analytics & SOC integration |  | 15d | 2027-05-13 | 2027-06-02 | 145 | 143d | Electrical Crew [480 h] | 310,603 |
| 169 | N0202 Section 2 — L4 integrated systems testing |  | 18d | 2027-05-13 | 2027-06-07 | 168 | 76d | Commissioning Team [1440 h] | 203,354 |
| 188 | J0113 Hall 3 — substation 20/0.4 kV, UPS, batteries, LV boards & busway |  | 25d | 2027-05-27 | 2027-06-30 | 187 SS+75d | 0d | Electrical Crew [2400 h] | 1,232,853 |
| 170 | N0203 Section 2 — L5 integrated load-bank testing (24 h at full IT load) |  | 5d | 2027-06-08 | 2027-06-14 | 169 | 76d | Commissioning Team [160 h] | 96,681 |
| 171 | Z0002 MS: SECTION 2 TAKING OVER (Contract Month 16 = 02 July 2027; LD EUR 12,000/day) | milestone | 0d | 2027-06-15 | 2027-06-15 | 170 | 76d |  |  |
| 172 | X0101 CALENDAR ALLOWANCE — Finnish public holidays 2027 (8 non-working weekdays) |  | 6d | 2027-06-15 | 2027-06-22 | 171, 167 | 76d |  |  |
| 173 | X0102 CALENDAR ALLOWANCE — summer construction shutdown 2027, weeks 28-30 (15 non-working weekdays) |  | 15d | 2027-06-23 | 2027-07-13 | 172 | 76d |  |  |
| 152 | L0105 Hall 3 — floor finish, cold-aisle containment & white-space fit-out |  | 25d | 2027-07-01 | 2027-08-04 | 199, 188, 191 | 45d | Fit-Out Crew [3200 h] | 644,951 |
| 189 | J0114 Hall 4 — substation 20/0.4 kV, UPS, batteries, LV boards & busway |  | 25d | 2027-07-29 | 2027-09-01 | 188 SS+45d | 0d | Electrical Crew [2400 h] | 1,232,853 |
| 177 | N0401 Section 3 — L2/L3 static inspection & component start-up |  | 15d | 2027-08-05 | 2027-08-25 | 152, 173 SS | 45d | Commissioning Team [480 h] | 135,428 |
| 178 | N0402 Section 3 — L4 integrated systems testing |  | 18d | 2027-08-26 | 2027-09-20 | 177 | 45d | Commissioning Team [1440 h] | 203,354 |
| 140 | J0115 Energy metering per hall, per feed & PUE instrumentation |  | 15d | 2027-09-02 | 2027-09-22 | 189, 26 | 63d | Electrical Crew [360 h] | 138,715 |
| 153 | L0106 Hall 4 — floor finish, cold-aisle containment & white-space fit-out |  | 25d | 2027-09-02 | 2027-10-06 | 200, 189, 192 | 0d | Fit-Out Crew [3200 h] | 644,951 |
| 179 | N0403 Section 3 — L5 integrated load-bank testing (24 h at full IT load) |  | 5d | 2027-09-21 | 2027-09-27 | 178 | 45d | Commissioning Team [160 h] | 96,681 |
| 180 | Z0005 MS: SECTION 3 TAKING OVER (Contract Month 19 = 02 October 2027; LD EUR 12,000/day) | milestone | 0d | 2027-09-28 | 2027-09-28 | 179 | 45d |  |  |
| 175 | N0301 DH waste-heat — 72-hour witnessed delivery test (HEATING SEASON 1 Oct-30 Apr ONLY) |  | 10d | 2027-10-05 | 2027-10-18 | 205 FS+45d | 30d | Commissioning Team [320 h] | 87,064 |
| 156 | M0101 Wayfinding, signage & hall labelling |  | 12d | 2027-10-07 | 2027-10-22 | 153, 154 | 11d | Fit-Out Crew [192 h] | 120,854 |
| 181 | N0501 Section 4 — L2/L3 static inspection & component start-up |  | 15d | 2027-10-07 | 2027-10-27 | 153 | 0d | Commissioning Team [480 h] | 135,428 |
| 176 | Z0004 MS: Waste-heat recovery verified (permit condition 23 — required before final occupancy) | milestone | 0d | 2027-10-19 | 2027-10-19 | 175 | 30d |  |  |
| 158 | M0103 As-built drawings, BIM as-built model, O&M manuals & spare parts |  | 15d | 2027-10-25 | 2027-11-12 | 156 | 11d | BIM Team [360 h] | 103,987 |
| 182 | N0502 Section 4 — L4 integrated systems testing |  | 18d | 2027-10-28 | 2027-11-22 | 181 | 0d | Commissioning Team [1440 h] | 203,354 |
| 183 | N0503 Section 4 — L5 integrated load-bank testing (24 h at full IT load) |  | 5d | 2027-11-23 | 2027-11-29 | 182 | 0d | Commissioning Team [160 h] | 96,681 |
| 184 | N0504 Final occupancy inspection & as-built submission to Building Control |  | 8d | 2027-11-30 | 2027-12-09 | 183, 176, 158, 157, 180, 194, 135 SS, 140 SS, 143 SS, 146 SS, 147 SS, 122 SS, 110 SS, 124 SS, 203 SS, 204 SS | 0d | Site Management [128 h] | 43,522 |
| 185 | N0505 Section 4 — snagging & final punch-list rectification |  | 15d | 2027-12-10 | 2027-12-30 | 184 | 0d | Site Management [1200 h] | 102,000 |
| 186 | Z0006 MS: SECTION 4 TAKING OVER / TIME FOR COMPLETION (Contract Month 22 = 02 Jan 2028; LD EUR 10,000/day) | milestone | 0d | 2027-12-31 | 2027-12-31 | 185 | 0d |  |  |
| 207 | Z0007 MS: RISK RESERVE DECLARED — explicit time contingency held OUTSIDE the CPM network so it does not distort network metrics; class p10 gate = +10.2 mo (222 wd); project Monte-Carlo P50 = +64 wd / P90 = +117 wd. Quantified in the Basis of Schedule. NOT contract scope. DECISION NEEDED. | milestone | 0d | 2027-12-31 | 2027-12-31 | 186, 209 | 0d |  |  |
| 208 | Z0008 MS: CONTRACTUAL COMPLETION CONFIRMED — Time for Completion, working day 480 (02 Jan 2028), with the declared risk reserve held outside the logic | milestone | 0d | 2027-12-31 | 2027-12-31 | 207 | 0d |  |  |

Notes:
- 102: Expenses: H0103 Roof penetrations, flashings, PV plinths & edge details — Expense 92713
- 191: Expenses: I0117 Hall 3 — CRAH units, chilled-water distribution & ventilation — Expense 777593
- 133: Expenses: J0108 Standby generation — 8 x 2.5 MVA gensets, acoustic enclosures & power cabling — Expense 2568650
- 109: Expenses: H0110 Airtightness works & testing to q50 <= 1.0 m3/h/m2 — Expense 71158
- 124: Expenses: I0114 Sprinkler installation & dry risers — ancillary, spine & admin/NOC — Expense 290345
- 110: Expenses: H0111 Roof safety lines, walkways & access hatches — Expense 48615
- 119: Expenses: I0109 Heat-recovery pipework, flow metering & DH boundary chamber tie-in — Expense 432355
- 159: Expenses: N0101 Pre-commissioning walkdowns & punch list — Section 1 — Expense 48779
- 131: Expenses: J0106 Hall 1 substation 20/0.4 kV, protection & sub-main cabling — Expense 508914
- 187: Expenses: J0112 Hall 2 — substation 20/0.4 kV, UPS, batteries, LV boards & busway — Expense 1079253
- 128: Expenses: J0103 110 kV termination, GIS, metering & protection — install, prove & witness — Expense 462701
- 122: Expenses: I0112 Mechanical insulation — chilled-water pipework & ductwork — Expense 283429
- 138: Expenses: J0113 Containment, power cabling, small power & lighting — all halls — Expense 1136818
- 144: Expenses: K0103 Fire detection & alarm — all areas incl. aspirating detection to white space — Expense 422918
- 193: Expenses: I0120 Inert-gas / water-mist suppression — Hall 1 & shared plant — Expense 319012
- 136: Expenses: J0111 Hall 1 — LV main switchboards, distribution boards & overhead busway to PDUs — Expense 917317
- 142: Expenses: K0101 BMS field devices, control panels, I/O & BACnet/IP integration — site-wide — Expense 839797
- 161: Expenses: N0103 L2/L3 — static inspection & component start-up — Section 1 — Expense 107683
- 157: Expenses: M0102 Landscaping, tree replacement (2:1) & permanent access (permit cond. 21/22) — Expense 2715780
- 132: Expenses: J0107 Hall 1 — UPS modules (4 x 1.0 MVA, N+1) & battery systems install — Expense 1525595
- 134: Expenses: J0109 Generator paralleling switchboard, ATS, black-start & control system — Expense 447010
- 129: Expenses: J0104 DNO 110 kV connection works, protection proving & energisation (outage window) — Expense 644204
- 143: Expenses: K0102 DCIM — per-hall power, cooling & environmental reporting — Expense 335232
- 151: Expenses: L0104 Hall 2 — floor finish, cold-aisle containment & white-space fit-out — Expense 472151
- 163: Expenses: N0105 Section 1 — L4 integrated systems testing & failure-mode demonstrations — Expense 91588
- 192: Expenses: I0118 Hall 4 — CRAH units, chilled-water distribution & ventilation — Expense 758482
- 145: Expenses: K0104 Access control — five security layers, mantrap & ANPR — Expense 424928
- 147: Expenses: K0106 Structured cabling, meet-me room, cross-connects & diverse fibre entries — Expense 562048
- 164: Expenses: N0106 Section 1 — L5 integrated load-bank testing (24 h at full IT load) — Expense 92264
- 168: Expenses: N0201 Section 2 — L2/L3 static inspection & component start-up — Expense 93188
- 194: Expenses: I0121 Inert-gas / water-mist suppression — Halls 2-4 — Expense 291265
- 165: Expenses: N0107 Section 1 — statutory & occupancy inspection (käyttöönottotarkastus) — Expense 24924
- 146: Expenses: K0105 CCTV — 90-day retention, perimeter analytics & SOC integration — Expense 279883
- 169: Expenses: N0202 Section 2 — L4 integrated systems testing — Expense 76634
- 188: Expenses: J0113 Hall 3 — substation 20/0.4 kV, UPS, batteries, LV boards & busway — Expense 1079253
- 170: Expenses: N0203 Section 2 — L5 integrated load-bank testing (24 h at full IT load) — Expense 82601
- 152: Expenses: L0105 Hall 3 — floor finish, cold-aisle containment & white-space fit-out — Expense 472151
- 189: Expenses: J0114 Hall 4 — substation 20/0.4 kV, UPS, batteries, LV boards & busway — Expense 1079253
- 177: Expenses: N0401 Section 3 — L2/L3 static inspection & component start-up — Expense 93188
- 178: Expenses: N0402 Section 3 — L4 integrated systems testing — Expense 76634
- 140: Expenses: J0115 Energy metering per hall, per feed & PUE instrumentation — Expense 115675
- 153: Expenses: L0106 Hall 4 — floor finish, cold-aisle containment & white-space fit-out — Expense 472151
- 179: Expenses: N0403 Section 3 — L5 integrated load-bank testing (24 h at full IT load) — Expense 82601
- 175: Expenses: N0301 DH waste-heat — 72-hour witnessed delivery test (HEATING SEASON 1 Oct-30 Apr ONLY) — Expense 58904
- 156: Expenses: M0101 Wayfinding, signage & hall labelling — Expense 110486
- 181: Expenses: N0501 Section 4 — L2/L3 static inspection & component start-up — Expense 93188
- 158: Expenses: M0103 As-built drawings, BIM as-built model, O&M manuals & spare parts — Expense 72307
- 182: Expenses: N0502 Section 4 — L4 integrated systems testing — Expense 76634
- 183: Expenses: N0503 Section 4 — L5 integrated load-bank testing (24 h at full IT load) — Expense 82601
- 184: Expenses: N0504 Final occupancy inspection & as-built submission to Building Control — Expense 32642
