# Polaris DC-1 — Aviapolis Data Campus Phase 1, Vantaa — Baseline CPM Programme

Schedule from Primavera P6, 2026-03-02 to 2027-09-09, costs in EUR.
Must finish by 2027-09-09

## Resources

| Resource | Group | Rate |
| --- | --- | --- |
| Design Team | labor | 65 |
| Vendor (HV Plant) | labor | 70 |
| Procurement | labor | 55 |
| Earthworks Crew | labor | 45 |
| Civil Crew | labor | 45 |
| Archaeology | labor | 55 |
| Vendor (Precast) | labor | 55 |
| Survey Crew | labor | 50 |
| Vendor (Mechanical) | labor | 62 |
| Steel & Precast Crew | labor | 50 |
| Vendor (Steel Fabricator) | labor | 55 |
| Electrical Crew | labor | 52 |
| Vendor (ELV) | labor | 62 |
| Commissioning Team | labor | 62 |
| Vendor (DNO) | labor | 75 |
| Vendor (Facade) | labor | 58 |
| Concrete Crew | labor | 45 |
| Piling Crew | labor | 55 |
| Logistics | labor | 40 |
| QA/QC Inspector | labor | 55 |
| Structural Steel Crew | labor | 50 |
| Facade Crew | labor | 48 |
| Mechanical Crew | labor | 52 |
| Interior Crew | labor | 42 |
| Waterproofing Crew | labor | 45 |

## Schedule

| ID | Activity | Type | Duration | Start | Finish | Predecessors | Total float | Resources | Cost |
| --- | --- | --- | --- | --- | --- | --- | --- | --- | --- |
| 1 | M01 Commencement Date (Contract Start) 2026-03-02 | milestone | 0d | 2026-03-02 | 2026-03-02 |  | 0d |  |  |
| 101 | Design team mobilisation, scope & design responsibility matrix |  | 8d | 2026-03-02 | 2026-03-11 | 1 | 0d | Design Team [192 h] | 76,347 |
| 201 | ADVANCE PROCUREMENT - power train ordered at/pre-Commencement (LT-01 compelling) | milestone | 0d | 2026-03-02 | 2026-03-02 | 1 | 21d |  | 8,868 |
| 202 | 110/20 kV transformers 2 x 16 MVA - in-contract balance of 52 wk lead (LT-01) |  | 219d | 2026-03-02 | 2026-12-31 | 201 | 21d | Vendor (HV Plant) [10512 h] | 5,825,992 |
| 204 | Standby generators 8 x 2.5 MVA - award & manufacture (LT-03, 40 wk) |  | 200d | 2026-03-02 | 2026-12-04 | 201 | 30d | Vendor (HV Plant) [8000 h] | 4,433,781 |
| 205 | UPS modules 16 x 1000 kVA - award & manufacture (LT-04, 30 wk) |  | 150d | 2026-03-02 | 2026-09-25 | 201 | 70d | Vendor (HV Plant) [4800 h] | 2,660,269 |
| 206 | Battery systems - award & manufacture (LT-05, 24 wk) |  | 120d | 2026-03-02 | 2026-08-14 | 201 | 116d | Vendor (HV Plant) [2880 h] | 1,596,161 |
| 207 | Overhead busway - award & manufacture (LT-06, 20 wk) |  | 100d | 2026-03-02 | 2026-07-17 | 201 | 97d | Vendor (HV Plant) [2400 h] | 1,330,134 |
| 102 | Employer's Requirements review & design basis confirmation |  | 10d | 2026-03-12 | 2026-03-25 | 101 | 2d | Design Team [240 h] | 95,434 |
| 103 | Geotechnical design & residual ground-risk review (PDC-SS-001) |  | 12d | 2026-03-12 | 2026-03-27 | 101 | 10d | Design Team [288 h] | 114,521 |
| 151 | Statutory supervisor appointments prepared & submitted (Condition 1) |  | 12d | 2026-03-12 | 2026-03-27 | 101 | 0d | Design Team [192 h] | 76,347 |
| 154 | Blasting design, scaled-distance calculation & vibration monitoring regime (base-date geotech) |  | 15d | 2026-03-12 | 2026-04-01 | 101 | 10d | Design Team [240 h] | 95,434 |
| 242 | Grid connection offer acceptance & 40 % deposit (offer expires 2026-04-03) |  | 5d | 2026-03-12 | 2026-03-18 | 101 | 22d | Procurement [80 h] | 31,811 |
| 2 | M02 Grid connection offer accepted / 40% deposit paid | milestone | 0d | 2026-03-19 | 2026-03-19 | 242 | 22d |  |  |
| 203 | 20 kV switchgear & protection - award & manufacture (LT-02, 38 wk) |  | 190d | 2026-03-19 | 2026-12-09 | 201, 2 | 22d | Vendor (HV Plant) [6080 h] | 3,369,674 |
| 104 | S1 concept design preparation & submission (Month 1) |  | 15d | 2026-03-26 | 2026-04-15 | 102 | 30d | Design Team [480 h] | 190,869 |
| 109 | Structural steel frame & connection design (tender-stage design exists) |  | 10d | 2026-03-26 | 2026-04-08 | 102 | 15d | Design Team [240 h] | 95,434 |
| 111 | Mechanical design development - cooling, CRAH & waste heat |  | 25d | 2026-03-26 | 2026-04-29 | 102 | 50d | Design Team [800 h] | 318,114 |
| 112 | Electrical HV/MV design & single-line diagrams |  | 25d | 2026-03-26 | 2026-04-29 | 102 | 2d | Design Team [800 h] | 318,114 |
| 113 | 110 kV substation design & protection / metering concept |  | 25d | 2026-03-26 | 2026-04-29 | 102 | 2d | Design Team [800 h] | 318,114 |
| 153 | Aloitusilmoitus - notice of commencement lodged (>=7 d before works) |  | 5d | 2026-03-26 | 2026-04-01 | 102 | 7d | Design Team [40 h] | 15,906 |
| 159 | Crane aviation clearance TC-01 (21-day lead, Condition 18) |  | 21d | 2026-03-26 | 2026-04-23 | 102 | 120d | Design Team [168 h] | 66,804 |
| 160 | Crane aviation clearance TC-02 / reconfiguration (21-day lead) |  | 21d | 2026-03-26 | 2026-04-23 | 102 | 128d | Design Team [168 h] | 66,804 |
| 161 | 110 kV OHTL exclusion-zone written permission - network operator |  | 20d | 2026-03-26 | 2026-04-22 | 102 | 121d | Design Team [160 h] | 63,623 |
| 108 | Substructure & foundation detailed design |  | 20d | 2026-03-30 | 2026-04-24 | 103 | 10d | Design Team [480 h] | 190,869 |
| 158 | Archaeological assessment / watching brief arrangement (Museovirasto) |  | 15d | 2026-03-30 | 2026-04-17 | 103 | 18d | Design Team [240 h] | 95,434 |
| 162 | Stormwater attenuation scheme & securities lodged (Condition 5) |  | 8d | 2026-03-30 | 2026-04-08 | 103 | 313d | Design Team [64 h] | 25,449 |
| 232 | Building Control approval of statutory supervisors |  | 10d | 2026-03-30 | 2026-04-10 | 151 | 0d | Design Team [80 h] | 31,811 |
| 155 | Blasting permit & notification to Vantaa authorities (Condition 11) |  | 25d | 2026-04-02 | 2026-05-06 | 154 | 10d | Design Team [400 h] | 159,057 |
| 110 | Precast wall panel specifications (2 h fire rating) |  | 8d | 2026-04-09 | 2026-04-20 | 109 | 84d | Design Team [128 h] | 50,898 |
| 212 | Structural steel - tender & vendor evaluation |  | 10d | 2026-04-09 | 2026-04-22 | 109 | 15d | Procurement [240 h] | 70,000 |
| 3 | M03 Statutory supervisors approved - site works may start (Condition 1) | milestone | 0d | 2026-04-13 | 2026-04-13 | 232 | 0d |  |  |
| 301 | Site clearance, vegetation strip & topsoil |  | 12d | 2026-04-13 | 2026-04-28 | 3, 153 | 0d | Earthworks Crew [1536 h] | 610,785 |
| 302 | Construction access, haul road & wheel wash off Tikkurilantie |  | 12d | 2026-04-13 | 2026-04-28 | 3 | 56d | Civil Crew [576 h] | 229,042 |
| 105 | Engineer review of S1 concept design (14 d) - SP-20 |  | 14d | 2026-04-16 | 2026-05-05 | 104 | 30d | Design Team [112 h] | 44,536 |
| 4 | M04 S1 concept design submitted (Month 1) | milestone | 0d | 2026-04-16 | 2026-04-16 | 104 | 44d |  |  |
| 309 | Archaeological watching brief - topsoil strip, NW corner |  | 12d | 2026-04-20 | 2026-05-05 | 158, 301 SS+3d | 18d | Archaeology [384 h] | 152,695 |
| 217 | Precast wall panels - order, manufacture & delivery (LT-12, 16 wk) |  | 80d | 2026-04-21 | 2026-08-10 | 110 | 84d | Vendor (Precast) [3840 h] | 1,120,000 |
| 213 | Structural steel - order placed (LT-11 order-by 2026-04-10) |  | 2d | 2026-04-23 | 2026-04-24 | 212 | 15d | Procurement [32 h] | 9,333 |
| 403 | Remove & replace made ground incl. sulphide - NW corner (B.04) |  | 12d | 2026-04-23 | 2026-05-08 | 309 SS+3d | 51d | Earthworks Crew [1536 h] | 297,950 |
| 121 | Structural IFC package issue |  | 8d | 2026-04-27 | 2026-05-06 | 108, 110 | 154d | Design Team [192 h] | 76,347 |
| 214 | Structural steel - shop drawings & approval |  | 12d | 2026-04-27 | 2026-05-12 | 6 | 15d | Design Team [192 h] | 56,000 |
| 222 | Substructure package TP-001 - tender & award |  | 15d | 2026-04-27 | 2026-05-15 | 108 | 10d | Procurement [360 h] | 69,832 |
| 6 | M06 Power train & structural steel ordered (Month 2) | milestone | 0d | 2026-04-27 | 2026-04-27 | 201, 213 | 15d |  |  |
| 303 | Site compound, welfare, fencing & hoarding |  | 15d | 2026-04-29 | 2026-05-19 | 301 | 0d | Civil Crew [720 h] | 286,303 |
| 305 | Survey setting-out & site grid establishment |  | 8d | 2026-04-29 | 2026-05-08 | 301 | 109d | Survey Crew [192 h] | 76,347 |
| 308 | Mobile crane & heavy plant mobilisation |  | 5d | 2026-04-29 | 2026-05-05 | 302 | 56d | Civil Crew [160 h] | 63,623 |
| 114 | Protection study preparation & submission to DNO |  | 15d | 2026-04-30 | 2026-05-20 | 113, 112 | 2d | Design Team [360 h] | 143,151 |
| 118 | Cold-aisle containment & thermal modelling |  | 15d | 2026-04-30 | 2026-05-20 | 111 | 167d | Design Team [240 h] | 95,434 |
| 119 | ELV / BMS-DCIM design |  | 18d | 2026-04-30 | 2026-05-25 | 112 | 87d | Design Team [432 h] | 171,782 |
| 208 | Chillers 4 nr - award & manufacture (LT-07, 26 wk) |  | 130d | 2026-04-30 | 2026-10-28 | 111 | 50d | Vendor (Mechanical) [3120 h] | 2,503,949 |
| 209 | Dry coolers / adiabatic units 10 nr - award & manufacture (LT-08, 22 wk) |  | 110d | 2026-04-30 | 2026-09-30 | 111 | 67d | Vendor (Mechanical) [2640 h] | 2,118,726 |
| 210 | CRAH units 28 nr - award & manufacture (LT-09, 22 wk) |  | 110d | 2026-04-30 | 2026-09-30 | 111 | 60d | Vendor (Mechanical) [2640 h] | 2,118,726 |
| 211 | Waste-heat recovery plant 4 MW - award & manufacture (LT-10, 30 wk) |  | 150d | 2026-04-30 | 2026-11-25 | 111 | 103d | Vendor (Mechanical) [3600 h] | 2,889,172 |
| 223 | MEP package TP-005/006 - tender & award |  | 15d | 2026-04-30 | 2026-05-20 | 112, 111 | 154d | Procurement [480 h] | 385,223 |
| 106 | S2 detailed design preparation & submission (Month 4) |  | 25d | 2026-05-06 | 2026-06-09 | 105, 4 | 30d | Design Team [800 h] | 318,114 |
| 156 | Pre-blast condition survey - residential & logistics neighbours (Condition 10) |  | 10d | 2026-05-07 | 2026-05-20 | 155 | 10d | Design Team [160 h] | 63,623 |
| 306 | Tower crane TC-01 foundation & erection |  | 8d | 2026-05-11 | 2026-05-20 | 159, 305, 161 | 109d | Steel & Precast Crew [384 h] | 152,695 |
| 307 | Tower crane TC-02 foundation & erection |  | 8d | 2026-05-11 | 2026-05-20 | 160, 305 | 117d | Steel & Precast Crew [384 h] | 152,695 |
| 215 | Structural steel - fabrication (LT-11, 18 wk) |  | 90d | 2026-05-13 | 2026-09-15 | 214 | 15d | Vendor (Steel Fabricator) [7200 h] | 2,099,998 |
| 304 | Temporary power, water & site drainage |  | 12d | 2026-05-20 | 2026-06-04 | 303 | 133d | Electrical Crew [384 h] | 152,695 |
| 310 | Groundwater & infiltration protection measures |  | 8d | 2026-05-20 | 2026-05-29 | 303 | 0d | Civil Crew [256 h] | 49,658 |
| 8 | M08 Site establishment complete | milestone | 0d | 2026-05-20 | 2026-05-20 | 303 | 8d |  |  |
| 115 | DNO review & approval of protection study (20 wd) - PDC-GC-001 cl.6.3 |  | 20d | 2026-05-21 | 2026-06-17 | 114 | 2d | Design Team [160 h] | 63,623 |
| 157 | Neighbour notification >=7 d before blasting (Condition 12) |  | 5d | 2026-05-21 | 2026-05-27 | 156 | 10d | Design Team [40 h] | 15,906 |
| 122 | MEP IFC package issue |  | 12d | 2026-05-26 | 2026-06-10 | 111, 119 | 129d | Design Team [384 h] | 152,695 |
| 220 | BMS/DCIM hardware & licences - order & delivery (LT-14, 16 wk) |  | 80d | 2026-05-26 | 2026-09-14 | 119 | 87d | Vendor (ELV) [2560 h] | 1,470,380 |
| 224 | ELV package TP-007 - tender & award |  | 12d | 2026-05-26 | 2026-06-10 | 119 | 147d | Procurement [288 h] | 165,418 |
| 401 | Bulk excavation in till - central & western two-thirds (B.02, 19,256 m3) |  | 40d | 2026-06-01 | 2026-07-24 | 301 SS+8d, 309, 310, 222, 8 | 0d | Earthworks Crew [10240 h] | 1,986,334 |
| 107 | Engineer review of S2 detailed design (21 d) - SP-20 |  | 21d | 2026-06-10 | 2026-07-08 | 106 | 202d | Design Team [168 h] | 66,804 |

Notes:
- 101: Expenses: Design team mobilisation, scope & design responsibility matrix — Materials/Plant/Sublet 63867
- 201: Expenses: ADVANCE PROCUREMENT - power train ordered at/pre-Commencement (LT-01 compelling) — Materials/Plant/Sublet 8868
- 202: Expenses: 110/20 kV transformers 2 x 16 MVA - in-contract balance of 52 wk lead (LT-01) — Materials/Plant/Sublet 5090152
- 204: Expenses: Standby generators 8 x 2.5 MVA - award & manufacture (LT-03, 40 wk) — Materials/Plant/Sublet 3873781
- 205: Expenses: UPS modules 16 x 1000 kVA - award & manufacture (LT-04, 30 wk) — Materials/Plant/Sublet 2324269
- 206: Expenses: Battery systems - award & manufacture (LT-05, 24 wk) — Materials/Plant/Sublet 1394561
- 207: Expenses: Overhead busway - award & manufacture (LT-06, 20 wk) — Materials/Plant/Sublet 1162134
- 102: Expenses: Employer's Requirements review & design basis confirmation — Materials/Plant/Sublet 79834
- 103: Expenses: Geotechnical design & residual ground-risk review (PDC-SS-001) — Materials/Plant/Sublet 95801
- 151: Expenses: Statutory supervisor appointments prepared & submitted (Condition 1) — Materials/Plant/Sublet 63867
- 154: Expenses: Blasting design, scaled-distance calculation & vibration monitoring regime (base-date geotech) — Materials/Plant/Sublet 79834
- 242: Expenses: Grid connection offer acceptance & 40 % deposit (offer expires 2026-04-03) — Materials/Plant/Sublet 27411
- 203: Expenses: 20 kV switchgear & protection - award & manufacture (LT-02, 38 wk) — Materials/Plant/Sublet 2944074
- 104: Expenses: S1 concept design preparation & submission (Month 1) — Materials/Plant/Sublet 159669
- 109: Expenses: Structural steel frame & connection design (tender-stage design exists) — Materials/Plant/Sublet 79834
- 111: Expenses: Mechanical design development - cooling, CRAH & waste heat — Materials/Plant/Sublet 266114
- 112: Expenses: Electrical HV/MV design & single-line diagrams — Materials/Plant/Sublet 266114
- 113: Expenses: 110 kV substation design & protection / metering concept — Materials/Plant/Sublet 266114
- 153: Expenses: Aloitusilmoitus - notice of commencement lodged (>=7 d before works) — Materials/Plant/Sublet 13306
- 159: Expenses: Crane aviation clearance TC-01 (21-day lead, Condition 18) — Materials/Plant/Sublet 55884
- 160: Expenses: Crane aviation clearance TC-02 / reconfiguration (21-day lead) — Materials/Plant/Sublet 55884
- 161: Expenses: 110 kV OHTL exclusion-zone written permission - network operator — Materials/Plant/Sublet 53223
- 108: Expenses: Substructure & foundation detailed design — Materials/Plant/Sublet 159669
- 158: Expenses: Archaeological assessment / watching brief arrangement (Museovirasto) — Materials/Plant/Sublet 79834
- 162: Expenses: Stormwater attenuation scheme & securities lodged (Condition 5) — Materials/Plant/Sublet 21289
- 232: Expenses: Building Control approval of statutory supervisors — Materials/Plant/Sublet 26611
- 155: Expenses: Blasting permit & notification to Vantaa authorities (Condition 11) — Materials/Plant/Sublet 133057
- 110: Expenses: Precast wall panel specifications (2 h fire rating) — Materials/Plant/Sublet 42578
- 212: Expenses: Structural steel - tender & vendor evaluation — Materials/Plant/Sublet 56800
- 301: Expenses: Site clearance, vegetation strip & topsoil — Materials/Plant/Sublet 541665
- 302: Expenses: Construction access, haul road & wheel wash off Tikkurilantie — Materials/Plant/Sublet 203122
- 105: Expenses: Engineer review of S1 concept design (14 d) - SP-20 — Materials/Plant/Sublet 37256
- 309: Expenses: Archaeological watching brief - topsoil strip, NW corner — Materials/Plant/Sublet 131575
- 217: Expenses: Precast wall panels - order, manufacture & delivery (LT-12, 16 wk) — Materials/Plant/Sublet 908800
- 213: Expenses: Structural steel - order placed (LT-11 order-by 2026-04-10) — Materials/Plant/Sublet 7573
- 403: Expenses: Remove & replace made ground incl. sulphide - NW corner (B.04) — Materials/Plant/Sublet 228830
- 121: Expenses: Structural IFC package issue — Materials/Plant/Sublet 63867
- 214: Expenses: Structural steel - shop drawings & approval — Materials/Plant/Sublet 43520
- 222: Expenses: Substructure package TP-001 - tender & award — Materials/Plant/Sublet 50032
- 303: Expenses: Site compound, welfare, fencing & hoarding — Materials/Plant/Sublet 253903
- 305: Expenses: Survey setting-out & site grid establishment — Materials/Plant/Sublet 66747
- 308: Expenses: Mobile crane & heavy plant mobilisation — Materials/Plant/Sublet 56423
- 114: Expenses: Protection study preparation & submission to DNO — Materials/Plant/Sublet 119751
- 118: Expenses: Cold-aisle containment & thermal modelling — Materials/Plant/Sublet 79834
- 119: Expenses: ELV / BMS-DCIM design — Materials/Plant/Sublet 143702
- 208: Expenses: Chillers 4 nr - award & manufacture (LT-07, 26 wk) — Materials/Plant/Sublet 2310509
- 209: Expenses: Dry coolers / adiabatic units 10 nr - award & manufacture (LT-08, 22 wk) — Materials/Plant/Sublet 1955046
- 210: Expenses: CRAH units 28 nr - award & manufacture (LT-09, 22 wk) — Materials/Plant/Sublet 1955046
- 211: Expenses: Waste-heat recovery plant 4 MW - award & manufacture (LT-10, 30 wk) — Materials/Plant/Sublet 2665972
- 223: Expenses: MEP package TP-005/006 - tender & award — Materials/Plant/Sublet 358823
- 106: Expenses: S2 detailed design preparation & submission (Month 4) — Materials/Plant/Sublet 266114
- 156: Expenses: Pre-blast condition survey - residential & logistics neighbours (Condition 10) — Materials/Plant/Sublet 53223
- 306: Expenses: Tower crane TC-01 foundation & erection — Materials/Plant/Sublet 133495
- 307: Expenses: Tower crane TC-02 foundation & erection — Materials/Plant/Sublet 133495
- 215: Expenses: Structural steel - fabrication (LT-11, 18 wk) — Materials/Plant/Sublet 1703998
- 304: Expenses: Temporary power, water & site drainage — Materials/Plant/Sublet 132727
- 310: Expenses: Groundwater & infiltration protection measures — Materials/Plant/Sublet 38138
- 115: Expenses: DNO review & approval of protection study (20 wd) - PDC-GC-001 cl.6.3 — Materials/Plant/Sublet 53223
- 157: Expenses: Neighbour notification >=7 d before blasting (Condition 12) — Materials/Plant/Sublet 13306
- 122: Expenses: MEP IFC package issue — Materials/Plant/Sublet 127735
- 220: Expenses: BMS/DCIM hardware & licences - order & delivery (LT-14, 16 wk) — Materials/Plant/Sublet 1311660
- 224: Expenses: ELV package TP-007 - tender & award — Materials/Plant/Sublet 149578
- 401: Expenses: Bulk excavation in till - central & western two-thirds (B.02, 19,256 m3) — Materials/Plant/Sublet 1525534
- 107: Expenses: Engineer review of S2 detailed design (21 d) - SP-20 — Materials/Plant/Sublet 55884

| ID | Activity | Type | Duration | Start | Finish | Predecessors | Total float | Resources | Cost |
| --- | --- | --- | --- | --- | --- | --- | --- | --- | --- |
| 116 | Envelope & facade design incl. acoustic louvre sizing |  | 18d | 2026-06-10 | 2026-07-03 | 5 | 37d | Design Team [432 h] | 171,782 |
| 117 | Fire engineering strategy & compartmentation design |  | 18d | 2026-06-10 | 2026-07-03 | 5 | 30d | Design Team [432 h] | 171,782 |
| 5 | M05 S2 detailed design submitted (Month 4) | milestone | 0d | 2026-06-10 | 2026-06-10 | 106 | 30d |  |  |
| 402 | Rock excavation by controlled blasting - eastern third (B.03, 3,214 m3) |  | 30d | 2026-06-11 | 2026-07-22 | 157, 401 SS+8d | 0d | Earthworks Crew [5760 h] | 1,117,313 |
| 404 | Sulphide-affected material segregation, testing & stockpiling (BH-12) |  | 8d | 2026-06-15 | 2026-06-24 | 401 SS+10d | 62d | Earthworks Crew [384 h] | 74,488 |
| 720 | Notice to energise given to DNO - 16 wk before window (PDC-GC-001 cl.7.2) |  | 2d | 2026-06-18 | 2026-06-19 | 115 | 2d | Commissioning Team [32 h] | 17,735 |
| 750 | DNO 110 kV connection works, protection approval & Stage 1 capacity release (16 wk notice + Mar-Apr 2027 outage window) |  | 188d | 2026-06-22 | 2027-03-10 | 720 | 2d | Vendor (DNO) [6016 h] | 451,200 |
| 411 | Service trenching, ducts & external drainage |  | 18d | 2026-06-29 | 2026-07-22 | 401 SS+20d, 403, 404 | 60d | Civil Crew [1728 h] | 335,194 |
| 120 | Lithium-ion battery fire strategy |  | 12d | 2026-07-06 | 2026-07-21 | 119, 117 | 100d | Design Team [192 h] | 76,347 |
| 218 | Envelope system - tender, vendor engineering, mock-up & production |  | 60d | 2026-07-06 | 2026-09-25 | 116 | 37d | Vendor (Facade) [4800 h] | 1,800,000 |
| 219 | Acoustic louvres - order & manufacture (LT-13, 16 wk) |  | 80d | 2026-07-06 | 2026-10-23 | 116 | 38d | Vendor (Facade) [2560 h] | 960,000 |
| 221 | Suppression system - order & manufacture (LT-15, 20 wk) |  | 100d | 2026-07-06 | 2026-11-20 | 117 | 30d | Vendor (ELV) [2400 h] | 1,378,481 |
| 225 | External works package TP-008 - tender & award |  | 12d | 2026-07-09 | 2026-07-24 | 107 | 202d | Procurement [288 h] | 161,476 |
| 406 | Pad & strip footings on undisturbed till (B.05, 30 nr) |  | 22d | 2026-07-13 | 2026-08-11 | 401 SS+30d, 403 | 6d | Concrete Crew [2816 h] | 546,242 |
| 7 | M07 Design freeze / IFC complete | milestone | 0d | 2026-07-22 | 2026-07-22 | 121, 122, 116, 120 | 100d |  |  |
| 405 | Piling - rock-socketed / direct-to-rock, heavy plant bases (B.06) |  | 15d | 2026-07-23 | 2026-08-12 | 401 SS+25d, 402, 308 | 0d | Piling Crew [1440 h] | 279,328 |
| 906 | Fibre ducting & carrier entry |  | 12d | 2026-07-23 | 2026-08-07 | 411 | 256d | Electrical Crew [384 h] | 215,301 |
| 901 | Site roads, kerbs & hardstanding |  | 25d | 2026-07-27 | 2026-08-28 | 411, 225 | 202d | Civil Crew [3200 h] | 1,794,176 |
| 407 | Pile load & integrity testing |  | 5d | 2026-08-13 | 2026-08-19 | 405 | 0d | Piling Crew [120 h] | 23,277 |
| 408 | Blinding, ground beams & pile caps (B.07, 1,450 m) |  | 18d | 2026-08-20 | 2026-09-14 | 406, 407 | 0d | Concrete Crew [2304 h] | 446,925 |
| 902 | Stormwater attenuation tank & connection (Condition 19) |  | 12d | 2026-08-31 | 2026-09-15 | 901, 162 | 211d | Civil Crew [576 h] | 322,951 |
| 903 | Foul & water connections - SW corner |  | 10d | 2026-08-31 | 2026-09-11 | 901 | 213d | Civil Crew [320 h] | 179,417 |
| 904 | Security fencing, gates & ANPR |  | 12d | 2026-08-31 | 2026-09-15 | 901 | 211d | Civil Crew [384 h] | 215,301 |
| 905 | External lighting & CCTV |  | 10d | 2026-08-31 | 2026-09-11 | 901 | 213d | Electrical Crew [320 h] | 179,417 |
| 409 | Ground-bearing slab, data halls & shared areas (B.08, 12,837 m2) |  | 22d | 2026-09-15 | 2026-10-14 | 408 | 0d | Concrete Crew [3520 h] | 682,802 |
| 410 | Substation & generator compound foundations and basements |  | 22d | 2026-09-15 | 2026-10-14 | 408 | 0d | Concrete Crew [2816 h] | 546,242 |
| 216 | Structural steel - TPI & delivery to site |  | 10d | 2026-09-16 | 2026-09-29 | 215 | 15d | Logistics [160 h] | 46,667 |
| 412 | Substructure inspection & Building Control sign-off (Condition 5) |  | 4d | 2026-10-15 | 2026-10-20 | 409, 410, 411 | 0d | QA/QC Inspector [64 h] | 12,415 |
| 601 | Transformer bunds, rails, HV structures & cable containment |  | 18d | 2026-10-15 | 2026-11-09 | 410, 304, 7 | 39d | Electrical Crew [864 h] | 478,848 |
| 501 | Steel frame erection - Halls 1 & 2 |  | 22d | 2026-10-21 | 2026-11-19 | 216, 306, 9 | 0d | Structural Steel Crew [3520 h] | 1,026,667 |
| 503 | Steel frame - substation, generator compound & NOC block |  | 18d | 2026-10-21 | 2026-11-13 | 216, 9 | 16d | Structural Steel Crew [1152 h] | 336,000 |
| 9 | M09 Substructure complete | milestone | 0d | 2026-10-21 | 2026-10-21 | 412 | 0d |  |  |
| 502 | Steel frame erection - Halls 3 & 4 |  | 22d | 2026-11-02 | 2026-12-01 | 501 SS+8d, 307 | 0d | Structural Steel Crew [3520 h] | 1,026,667 |
| 504 | Precast wall panels & 2 h fire compartmentation - Halls 1 & 2 |  | 20d | 2026-11-02 | 2026-11-27 | 217, 501 SS+8d | 25d | Steel & Precast Crew [2560 h] | 746,667 |
| 506 | Composite deck & concrete topping - Halls 1 & 2 roofs |  | 16d | 2026-11-04 | 2026-11-25 | 501 SS+10d | 4d | Concrete Crew [2560 h] | 746,667 |
| 610 | HV/MV/LV cable laying, terminations & power distribution |  | 26d | 2026-11-10 | 2026-12-15 | 601 | 39d | Electrical Crew [3328 h] | 1,844,453 |
| 505 | Precast wall panels & 2 h fire compartmentation - Halls 3 & 4 |  | 20d | 2026-11-12 | 2026-12-09 | 217, 502 SS+8d | 66d | Steel & Precast Crew [2560 h] | 746,667 |
| 508 | Envelope cladding - Halls 1 & 2, weathertight |  | 26d | 2026-11-12 | 2026-12-17 | 218, 506 SS+6d | 4d | Facade Crew [3328 h] | 1,248,000 |
| 507 | Composite deck & concrete topping - Halls 3 & 4 roofs |  | 16d | 2026-11-16 | 2026-12-07 | 502 SS+10d | 0d | Concrete Crew [2560 h] | 746,667 |
| 651 | Chillers - offloading & installation (4 nr) |  | 15d | 2026-11-16 | 2026-12-04 | 208, 503 | 38d | Mechanical Crew [720 h] | 577,834 |
| 653 | Chilled-water pipework, valves & insulation - shared spine |  | 26d | 2026-11-16 | 2026-12-21 | 503, 223 | 27d | Mechanical Crew [3328 h] | 2,670,879 |
| 511 | Acoustic louvres & cooling intake screens (Condition 13/14) |  | 12d | 2026-11-24 | 2026-12-09 | 219, 508 SS+8d | 17d | Facade Crew [384 h] | 144,000 |
| 509 | Envelope cladding - Halls 3 & 4 |  | 26d | 2026-11-26 | 2026-12-31 | 218, 508 SS+10d | 29d | Facade Crew [3328 h] | 1,248,000 |
| 607 | UPS modules - installation (16 nr) |  | 16d | 2026-11-30 | 2026-12-21 | 205, 504 | 25d | Electrical Crew [1536 h] | 851,286 |
| 657 | BMS/DCIM hardware installation & IO point-to-point checks |  | 20d | 2026-11-30 | 2026-12-25 | 220, 504 | 33d | Commissioning Team [800 h] | 459,494 |
| 658 | Suppression system installation - data halls |  | 20d | 2026-11-30 | 2026-12-25 | 221, 504, 224 | 25d | Mechanical Crew [960 h] | 551,392 |
| 909 | NOC / admin block - structure, envelope & fit-out |  | 70d | 2026-11-30 | 2027-03-05 | 503, 504, 7 | 136d | Interior Crew [8960 h] | 1,635,398 |
| 609 | Overhead busway - installation - shared spine |  | 16d | 2026-12-02 | 2026-12-23 | 207, 502 | 0d | Electrical Crew [1536 h] | 851,286 |
| 605 | Standby generators - offloading & installation (8 nr) |  | 18d | 2026-12-07 | 2026-12-30 | 204, 503 | 30d | Electrical Crew [2304 h] | 1,276,929 |
| 510 | Roof waterproofing - halls, NOC & shared plant areas |  | 12d | 2026-12-08 | 2026-12-23 | 506, 507, 503 | 0d | Waterproofing Crew [384 h] | 144,000 |
| 603 | 20 kV switchgear & protection panels installation |  | 18d | 2026-12-10 | 2027-01-04 | 203, 410 | 22d | Electrical Crew [864 h] | 478,848 |
| 606 | Generator control panels, paralleling, ATS & fuel systems |  | 12d | 2026-12-11 | 2026-12-28 | 605 SS+4d | 30d | Electrical Crew [576 h] | 319,232 |
| 611 | Earthing & lightning protection - substation & halls |  | 12d | 2026-12-16 | 2026-12-31 | 610 | 39d | Electrical Crew [384 h] | 212,821 |
| 10 | M10 Hall 1 weathertight | milestone | 0d | 2026-12-18 | 2026-12-18 | 508 | 4d |  |  |
| 608 | Battery systems - installation |  | 10d | 2026-12-22 | 2027-01-04 | 206, 607 | 25d | Electrical Crew [320 h] | 177,351 |
| 655 | Waste-heat recovery plant - installation (4 MW) |  | 18d | 2026-12-22 | 2027-01-14 | 211, 653 | 85d | Mechanical Crew [864 h] | 693,401 |
| 652 | Dry coolers / adiabatic units - installation (10 nr) |  | 18d | 2026-12-24 | 2027-01-18 | 209, 510, 511 | 7d | Mechanical Crew [1728 h] | 1,386,803 |
| 701 | CRAH units - installation, Hall 1 (7 nr) |  | 12d | 2026-12-24 | 2027-01-08 | 210, 510, 10 | 0d | Mechanical Crew [576 h] | 462,268 |
| 702 | Overhead busway, RPPs & electrical distribution - Hall 1 |  | 12d | 2026-12-24 | 2027-01-08 | 609, 10 | 0d | Electrical Crew [1152 h] | 638,464 |
| 907 | Oil separators & generator compound bunding (Condition 20) |  | 8d | 2026-12-31 | 2027-01-11 | 605 | 127d | Civil Crew [256 h] | 143,534 |
| 602 | 110/20 kV transformers - offloading, installation & oil filling (2 nr) |  | 15d | 2027-01-01 | 2027-01-21 | 601, 202 | 21d | Electrical Crew [720 h] | 399,040 |
| 604 | Protection relay secondary injection & scheme testing |  | 12d | 2027-01-05 | 2027-01-20 | 603, 115 | 22d | Commissioning Team [384 h] | 212,821 |
| 7072 | L2/L3 static commissioning - generators, ATS, UPS & batteries |  | 16d | 2027-01-05 | 2027-01-26 | 606, 608 | 25d | Commissioning Team [768 h] | 125,786 |
| 703 | Cold-aisle containment & white-space fit-out - Hall 1 |  | 15d | 2027-01-11 | 2027-01-29 | 701, 702, 118 | 0d | Interior Crew [1920 h] | 408,850 |
| 704 | Internal lighting, containment & small power - Hall 1 |  | 12d | 2027-01-11 | 2027-01-26 | 702 | 13d | Electrical Crew [1152 h] | 245,310 |
| 908 | Soft landscaping & planting (Condition 21 - growing season) |  | 18d | 2027-01-12 | 2027-02-04 | 902, 903, 904, 905, 907 | 127d | Civil Crew [864 h] | 484,427 |
| 656 | Waste-heat pipework to boundary chamber & metering skid |  | 18d | 2027-01-15 | 2027-02-09 | 655 | 85d | Mechanical Crew [864 h] | 693,401 |
| 654 | Cooling system pressure testing & flushing |  | 10d | 2027-01-19 | 2027-02-01 | 653, 651, 652 | 7d | Commissioning Team [320 h] | 256,815 |
| 7071 | L2/L3 static commissioning - HV substation, switchgear, protection & LV distribution |  | 14d | 2027-01-21 | 2027-02-09 | 604, 611 | 25d | Commissioning Team [672 h] | 110,062 |
| 712 | CRAH units, busway & electrical distribution - Hall 2 |  | 16d | 2027-01-21 | 2027-02-11 | 701 SS+20d, 509 | 15d | Mechanical Crew [2048 h] | 1,643,618 |

Notes:
- 116: Expenses: Envelope & facade design incl. acoustic louvre sizing — Materials/Plant/Sublet 143702
- 117: Expenses: Fire engineering strategy & compartmentation design — Materials/Plant/Sublet 143702
- 402: Expenses: Rock excavation by controlled blasting - eastern third (B.03, 3,214 m3) — Materials/Plant/Sublet 858113
- 404: Expenses: Sulphide-affected material segregation, testing & stockpiling (BH-12) — Materials/Plant/Sublet 57208
- 720: Expenses: Notice to energise given to DNO - 16 wk before window (PDC-GC-001 cl.7.2) — Materials/Plant/Sublet 15751
- 411: Expenses: Service trenching, ducts & external drainage — Materials/Plant/Sublet 257434
- 120: Expenses: Lithium-ion battery fire strategy — Materials/Plant/Sublet 63867
- 218: Expenses: Envelope system - tender, vendor engineering, mock-up & production — Materials/Plant/Sublet 1521600
- 219: Expenses: Acoustic louvres - order & manufacture (LT-13, 16 wk) — Materials/Plant/Sublet 811520
- 221: Expenses: Suppression system - order & manufacture (LT-15, 20 wk) — Materials/Plant/Sublet 1229681
- 225: Expenses: External works package TP-008 - tender & award — Materials/Plant/Sublet 145636
- 406: Expenses: Pad & strip footings on undisturbed till (B.05, 30 nr) — Materials/Plant/Sublet 419522
- 405: Expenses: Piling - rock-socketed / direct-to-rock, heavy plant bases (B.06) — Materials/Plant/Sublet 200128
- 906: Expenses: Fibre ducting & carrier entry — Materials/Plant/Sublet 195333
- 901: Expenses: Site roads, kerbs & hardstanding — Materials/Plant/Sublet 1650176
- 407: Expenses: Pile load & integrity testing — Materials/Plant/Sublet 16677
- 408: Expenses: Blinding, ground beams & pile caps (B.07, 1,450 m) — Materials/Plant/Sublet 343245
- 902: Expenses: Stormwater attenuation tank & connection (Condition 19) — Materials/Plant/Sublet 297031
- 903: Expenses: Foul & water connections - SW corner — Materials/Plant/Sublet 165017
- 904: Expenses: Security fencing, gates & ANPR — Materials/Plant/Sublet 198021
- 905: Expenses: External lighting & CCTV — Materials/Plant/Sublet 162777
- 409: Expenses: Ground-bearing slab, data halls & shared areas (B.08, 12,837 m2) — Materials/Plant/Sublet 524402
- 410: Expenses: Substation & generator compound foundations and basements — Materials/Plant/Sublet 419522
- 216: Expenses: Structural steel - TPI & delivery to site — Materials/Plant/Sublet 40267
- 412: Expenses: Substructure inspection & Building Control sign-off (Condition 5) — Materials/Plant/Sublet 8895
- 601: Expenses: Transformer bunds, rails, HV structures & cable containment — Materials/Plant/Sublet 433920
- 501: Expenses: Steel frame erection - Halls 1 & 2 — Materials/Plant/Sublet 850667
- 503: Expenses: Steel frame - substation, generator compound & NOC block — Materials/Plant/Sublet 278400
- 502: Expenses: Steel frame erection - Halls 3 & 4 — Materials/Plant/Sublet 850667
- 504: Expenses: Precast wall panels & 2 h fire compartmentation - Halls 1 & 2 — Materials/Plant/Sublet 618667
- 506: Expenses: Composite deck & concrete topping - Halls 1 & 2 roofs — Materials/Plant/Sublet 631467
- 610: Expenses: HV/MV/LV cable laying, terminations & power distribution — Materials/Plant/Sublet 1671397
- 505: Expenses: Precast wall panels & 2 h fire compartmentation - Halls 3 & 4 — Materials/Plant/Sublet 618667
- 508: Expenses: Envelope cladding - Halls 1 & 2, weathertight — Materials/Plant/Sublet 1088256
- 507: Expenses: Composite deck & concrete topping - Halls 3 & 4 roofs — Materials/Plant/Sublet 631467
- 651: Expenses: Chillers - offloading & installation (4 nr) — Materials/Plant/Sublet 540394
- 653: Expenses: Chilled-water pipework, valves & insulation - shared spine — Materials/Plant/Sublet 2497823
- 511: Expenses: Acoustic louvres & cooling intake screens (Condition 13/14) — Materials/Plant/Sublet 125568
- 509: Expenses: Envelope cladding - Halls 3 & 4 — Materials/Plant/Sublet 1088256
- 607: Expenses: UPS modules - installation (16 nr) — Materials/Plant/Sublet 771414
- 657: Expenses: BMS/DCIM hardware installation & IO point-to-point checks — Materials/Plant/Sublet 409894
- 658: Expenses: Suppression system installation - data halls — Materials/Plant/Sublet 501472
- 909: Expenses: NOC / admin block - structure, envelope & fit-out — Materials/Plant/Sublet 1259078
- 609: Expenses: Overhead busway - installation - shared spine — Materials/Plant/Sublet 771414
- 605: Expenses: Standby generators - offloading & installation (8 nr) — Materials/Plant/Sublet 1157121
- 510: Expenses: Roof waterproofing - halls, NOC & shared plant areas — Materials/Plant/Sublet 126720
- 603: Expenses: 20 kV switchgear & protection panels installation — Materials/Plant/Sublet 433920
- 606: Expenses: Generator control panels, paralleling, ATS & fuel systems — Materials/Plant/Sublet 289280
- 611: Expenses: Earthing & lightning protection - substation & halls — Materials/Plant/Sublet 192853
- 608: Expenses: Battery systems - installation — Materials/Plant/Sublet 160711
- 655: Expenses: Waste-heat recovery plant - installation (4 MW) — Materials/Plant/Sublet 648473
- 652: Expenses: Dry coolers / adiabatic units - installation (10 nr) — Materials/Plant/Sublet 1296947
- 701: Expenses: CRAH units - installation, Hall 1 (7 nr) — Materials/Plant/Sublet 432316
- 702: Expenses: Overhead busway, RPPs & electrical distribution - Hall 1 — Materials/Plant/Sublet 578560
- 907: Expenses: Oil separators & generator compound bunding (Condition 20) — Materials/Plant/Sublet 132014
- 602: Expenses: 110/20 kV transformers - offloading, installation & oil filling (2 nr) — Materials/Plant/Sublet 361600
- 604: Expenses: Protection relay secondary injection & scheme testing — Materials/Plant/Sublet 189013
- 7072: Expenses: L2/L3 static commissioning - generators, ATS, UPS & batteries — Materials/Plant/Sublet 78170
- 703: Expenses: Cold-aisle containment & white-space fit-out - Hall 1 — Materials/Plant/Sublet 328210
- 704: Expenses: Internal lighting, containment & small power - Hall 1 — Materials/Plant/Sublet 185406
- 908: Expenses: Soft landscaping & planting (Condition 21 - growing season) — Materials/Plant/Sublet 445547
- 656: Expenses: Waste-heat pipework to boundary chamber & metering skid — Materials/Plant/Sublet 648473
- 654: Expenses: Cooling system pressure testing & flushing — Materials/Plant/Sublet 236975
- 7071: Expenses: L2/L3 static commissioning - HV substation, switchgear, protection & LV distribution — Materials/Plant/Sublet 68398
- 712: Expenses: CRAH units, busway & electrical distribution - Hall 2 — Materials/Plant/Sublet 1537122

| ID | Activity | Type | Duration | Start | Finish | Predecessors | Total float | Resources | Cost |
| --- | --- | --- | --- | --- | --- | --- | --- | --- | --- |
| 612 | 110 kV incoming feeder, switchyard & DNO termination works |  | 15d | 2027-01-22 | 2027-02-11 | 602, 604 | 21d | Electrical Crew [720 h] | 399,040 |
| 705 | Fire detection & suppression - Hall 1 |  | 10d | 2027-02-01 | 2027-02-12 | 658, 703 | 0d | Commissioning Team [400 h] | 229,747 |
| 7073 | L2/L3 static commissioning - cooling, BMS/DCIM & suppression |  | 14d | 2027-02-02 | 2027-02-19 | 654, 657, 658 | 7d | Commissioning Team [672 h] | 110,062 |
| 950 | DH boundary chamber, metering skid & flanged connection (PDC-DH-001 cl.7.1) |  | 18d | 2027-02-10 | 2027-03-05 | 656, 901 | 85d | Mechanical Crew [864 h] | 693,401 |
| 723 | CRAH units, busway & electrical distribution - Hall 3 |  | 16d | 2027-02-11 | 2027-03-04 | 712 SS+15d, 509, 505 | 21d | Mechanical Crew [2048 h] | 1,438,166 |
| 713 | Cold-aisle containment & white-space fit-out - Hall 2 |  | 18d | 2027-02-12 | 2027-03-09 | 712, 703 SS+20d | 15d | Interior Crew [2304 h] | 490,619 |
| 714 | Internal lighting, containment & small power - Hall 2 |  | 14d | 2027-02-12 | 2027-03-03 | 712 | 19d | Electrical Crew [1344 h] | 286,195 |
| 706 | L1 component & L2 subsystem commissioning - Hall 1 & shared spine |  | 12d | 2027-02-15 | 2027-03-02 | 704, 705, 657 | 0d | Commissioning Team [576 h] | 94,339 |
| 715 | Fire detection & suppression - Hall 2 |  | 12d | 2027-02-19 | 2027-03-08 | 713 SS+5d, 658 | 16d | Commissioning Team [480 h] | 275,696 |
| 11 | M11 Shared infrastructure complete & statically commissioned | milestone | 0d | 2027-02-22 | 2027-02-22 | 7071, 7072, 7073 | 17d |  |  |
| 7081 | L4a integrated systems testing - OFF-GRID (generator/ATS/UPS/cooling sequence) |  | 14d | 2027-03-03 | 2027-03-22 | 7072, 7073, 706 | 0d | Commissioning Team [896 h] | 146,750 |
| 730 | CRAH units, busway & electrical distribution - Hall 4 |  | 16d | 2027-03-04 | 2027-03-25 | 723 SS+15d, 509 | 27d | Mechanical Crew [2048 h] | 1,643,618 |
| 724 | Cold-aisle containment & white-space fit-out - Hall 3 |  | 18d | 2027-03-05 | 2027-03-30 | 723, 713 SS+15d | 21d | Interior Crew [2304 h] | 490,619 |
| 725 | Internal lighting, containment & small power - Hall 3 |  | 14d | 2027-03-05 | 2027-03-24 | 723 | 25d | Electrical Crew [1344 h] | 286,195 |
| 951 | DH as-built docs, control philosophy & C&E matrices (8 wk before test) |  | 12d | 2027-03-08 | 2027-03-23 | 950, 657 | 85d | Commissioning Team [288 h] | 47,170 |
| 716 | L1-L3 commissioning - Hall 2 |  | 18d | 2027-03-10 | 2027-04-02 | 713, 714, 715 | 15d | Commissioning Team [864 h] | 141,509 |
| 721 | DNO Stage 1 energisation, metering & protection witness (6.5 MVA) |  | 2d | 2027-03-11 | 2027-03-12 | 750, 612, 611 | 2d | Commissioning Team [64 h] | 35,470 |
| 726 | Fire detection & suppression - Hall 3 |  | 12d | 2027-03-12 | 2027-03-29 | 724 SS+5d, 658 | 22d | Commissioning Team [480 h] | 275,696 |
| 12 | M12 110 kV Stage 1 energisation available (DNO) - 2027-03-12 | milestone | 0d | 2027-03-15 | 2027-03-15 | 722 | 2d |  |  |
| 708 | L3 system energisation & switch-on |  | 4d | 2027-03-15 | 2027-03-18 | 11, 12 | 2d | Commissioning Team [160 h] | 26,205 |
| 722 | Energisation of 110/20 kV substation - Stage 1 (6.5 MVA) | milestone | 0d | 2027-03-15 | 2027-03-15 | 721 | 2d |  | 17,735 |
| 709 | L4b grid-integrated systems testing - utility supply to load, Section 1 |  | 13d | 2027-03-23 | 2027-04-08 | 708, 7081 | 0d | Commissioning Team [832 h] | 136,268 |
| 952 | DH 72 h witnessed delivery test >=4 MW at >=70 C (heating season Oct-Apr only) |  | 9d | 2027-03-24 | 2027-04-05 | 951 | 85d | Commissioning Team [360 h] | 58,962 |
| 731 | Cold-aisle containment & white-space fit-out - Hall 4 |  | 18d | 2027-03-26 | 2027-04-20 | 730, 724 SS+15d | 27d | Interior Crew [2304 h] | 490,619 |
| 732 | Internal lighting, containment & small power - Hall 4 |  | 14d | 2027-03-26 | 2027-04-14 | 730 | 31d | Electrical Crew [1344 h] | 286,195 |
| 860 | Section 1 handover documentation, as-builts, O&M & training (prepared during L4b testing) |  | 12d | 2027-03-29 | 2027-04-13 | 709 SS+4d | 8d | Commissioning Team [288 h] | 47,170 |
| 727 | L1-L3 commissioning - Hall 3 |  | 18d | 2027-03-31 | 2027-04-23 | 724, 725, 726 | 21d | Commissioning Team [864 h] | 141,509 |
| 733 | Fire detection & suppression - Hall 4 |  | 12d | 2027-04-02 | 2027-04-19 | 731 SS+5d, 658 | 28d | Commissioning Team [480 h] | 275,696 |
| 17 | M17 DH waste-heat 72 h witnessed delivery test complete (Condition 23) | milestone | 0d | 2027-04-06 | 2027-04-06 | 952 | 85d |  |  |
| 13 | M13 Section 1 L4 integrated systems testing complete | milestone | 0d | 2027-04-09 | 2027-04-09 | 709 | 11d |  |  |
| 710 | L5 24 h load-bank test - Section 1 (REQUIRES written exemption to Permit Condition 15 to run continuous hours) |  | 3d | 2027-04-09 | 2027-04-13 | 709 | 0d | Commissioning Team [144 h] | 47,170 |
| 14 | M14 Section 1 L5 24 h load bank complete | milestone | 0d | 2027-04-14 | 2027-04-14 | 710, 13 | 8d |  |  |
| 711 | Section 1 occupancy inspection & rectification (Condition 6) - overlapped with load-bank test under Condition 5 |  | 8d | 2027-04-14 | 2027-04-23 | 710 SS+3d | 0d | QA/QC Inspector [192 h] | 31,446 |
| 734 | L1-L3 commissioning - Hall 4 |  | 18d | 2027-04-21 | 2027-05-14 | 731, 732, 733 | 27d | Commissioning Team [864 h] | 141,509 |
| 15 | M15 SECTION 1 TAKING OVER - contractual 2027-05-02 | milestone | 0d | 2027-04-26 | 2027-04-26 | 711, 860, 14 | 0d |  |  |
| 717 | L4 integrated systems testing - Section 2 (after Section 1 Taking Over) |  | 15d | 2027-04-26 | 2027-05-14 | 716, 15 | 0d | Commissioning Team [960 h] | 157,231 |
| 718 | L5 24 h load-bank test - Section 2 |  | 6d | 2027-05-17 | 2027-05-24 | 717 | 0d | Commissioning Team [288 h] | 47,170 |
| 728 | L4 integrated systems testing - Section 3 |  | 15d | 2027-05-25 | 2027-06-14 | 727, 718 | 0d | Commissioning Team [960 h] | 157,232 |
| 819 | Section 2 occupancy inspection & handover |  | 8d | 2027-05-25 | 2027-06-03 | 718 | 54d | QA/QC Inspector [192 h] | 31,446 |
| 861 | Section 2 handover documentation & training |  | 10d | 2027-05-25 | 2027-06-07 | 718 | 52d | Commissioning Team [240 h] | 39,308 |
| 16 | M16 SECTION 2 TAKING OVER - contractual 2027-07-02 | milestone | 0d | 2027-06-08 | 2027-06-08 | 819, 861 | 52d |  |  |
| 729 | L5 24 h load-bank test - Section 3 |  | 6d | 2027-06-15 | 2027-06-22 | 728 | 0d | Commissioning Team [288 h] | 47,170 |
| 735 | L4 integrated systems testing - Section 4 |  | 15d | 2027-06-23 | 2027-07-13 | 734, 729 | 0d | Commissioning Team [960 h] | 157,232 |
| 825 | Section 3 occupancy inspection & handover |  | 8d | 2027-06-23 | 2027-07-02 | 729 | 33d | QA/QC Inspector [192 h] | 31,446 |
| 862 | Section 3 handover documentation & training |  | 10d | 2027-06-23 | 2027-07-06 | 729 | 31d | Commissioning Team [240 h] | 39,308 |
| 18 | M18 SECTION 3 TAKING OVER - contractual 2027-10-02 | milestone | 0d | 2027-07-07 | 2027-07-07 | 825, 862, 16 | 31d |  |  |
| 736 | L5 24 h load-bank test - Section 4 |  | 6d | 2027-07-14 | 2027-07-21 | 735 | 0d | Commissioning Team [288 h] | 47,170 |
| 863 | Section 4 handover documentation & training |  | 10d | 2027-07-20 | 2027-08-02 | 736 SS+4d | 0d | Commissioning Team [240 h] | 39,308 |
| 833 | Section 4 occupancy inspection & handover |  | 8d | 2027-07-22 | 2027-08-02 | 736 | 12d | QA/QC Inspector [192 h] | 31,446 |
| 910 | NOC commissioning & final occupancy preparation (Condition 23) |  | 12d | 2027-08-03 | 2027-08-18 | 909 SS+40d, 863, 906, 908, 17 | 0d | Commissioning Team [480 h] | 78,616 |
| 7082 | EXPLICIT TIME CONTINGENCY - reference-class risk allowance (held, NOT smeared into activity durations) |  | 15d | 2027-08-19 | 2027-09-08 | 833, 863, 910, 18 | 0d |  |  |
| 19 | M19 SECTION 4 TAKING OVER / TIME FOR COMPLETION - contractual 2028-01-02 | milestone | 0d | 2027-09-09 | 2027-09-09 | 7082 | 0d |  |  |

Notes:
- 612: Expenses: 110 kV incoming feeder, switchyard & DNO termination works — Materials/Plant/Sublet 361600
- 705: Expenses: Fire detection & suppression - Hall 1 — Materials/Plant/Sublet 204947
- 7073: Expenses: L2/L3 static commissioning - cooling, BMS/DCIM & suppression — Materials/Plant/Sublet 68398
- 950: Expenses: DH boundary chamber, metering skid & flanged connection (PDC-DH-001 cl.7.1) — Materials/Plant/Sublet 648473
- 723: Expenses: CRAH units, busway & electrical distribution - Hall 3 — Materials/Plant/Sublet 1331670
- 713: Expenses: Cold-aisle containment & white-space fit-out - Hall 2 — Materials/Plant/Sublet 393851
- 714: Expenses: Internal lighting, containment & small power - Hall 2 — Materials/Plant/Sublet 216307
- 706: Expenses: L1 component & L2 subsystem commissioning - Hall 1 & shared spine — Materials/Plant/Sublet 58627
- 715: Expenses: Fire detection & suppression - Hall 2 — Materials/Plant/Sublet 245936
- 7081: Expenses: L4a integrated systems testing - OFF-GRID (generator/ATS/UPS/cooling sequence) — Materials/Plant/Sublet 91198
- 730: Expenses: CRAH units, busway & electrical distribution - Hall 4 — Materials/Plant/Sublet 1537122
- 724: Expenses: Cold-aisle containment & white-space fit-out - Hall 3 — Materials/Plant/Sublet 393851
- 725: Expenses: Internal lighting, containment & small power - Hall 3 — Materials/Plant/Sublet 216307
- 951: Expenses: DH as-built docs, control philosophy & C&E matrices (8 wk before test) — Materials/Plant/Sublet 29314
- 716: Expenses: L1-L3 commissioning - Hall 2 — Materials/Plant/Sublet 87941
- 721: Expenses: DNO Stage 1 energisation, metering & protection witness (6.5 MVA) — Materials/Plant/Sublet 31502
- 726: Expenses: Fire detection & suppression - Hall 3 — Materials/Plant/Sublet 245936
- 708: Expenses: L3 system energisation & switch-on — Materials/Plant/Sublet 16285
- 722: Expenses: Energisation of 110/20 kV substation - Stage 1 (6.5 MVA) — Materials/Plant/Sublet 17735
- 709: Expenses: L4b grid-integrated systems testing - utility supply to load, Section 1 — Materials/Plant/Sublet 84684
- 952: Expenses: DH 72 h witnessed delivery test >=4 MW at >=70 C (heating season Oct-Apr only) — Materials/Plant/Sublet 36642
- 731: Expenses: Cold-aisle containment & white-space fit-out - Hall 4 — Materials/Plant/Sublet 393851
- 732: Expenses: Internal lighting, containment & small power - Hall 4 — Materials/Plant/Sublet 216307
- 860: Expenses: Section 1 handover documentation, as-builts, O&M & training (prepared during L4b testing) — Materials/Plant/Sublet 29314
- 727: Expenses: L1-L3 commissioning - Hall 3 — Materials/Plant/Sublet 87941
- 733: Expenses: Fire detection & suppression - Hall 4 — Materials/Plant/Sublet 245936
- 710: Expenses: L5 24 h load-bank test - Section 1 (REQUIRES written exemption to Permit Condition 15 to run continuous hours) — Materials/Plant/Sublet 38242
- 711: Expenses: Section 1 occupancy inspection & rectification (Condition 6) - overlapped with load-bank test under Condition 5 — Materials/Plant/Sublet 20886
- 734: Expenses: L1-L3 commissioning - Hall 4 — Materials/Plant/Sublet 87941
- 717: Expenses: L4 integrated systems testing - Section 2 (after Section 1 Taking Over) — Materials/Plant/Sublet 97711
- 718: Expenses: L5 24 h load-bank test - Section 2 — Materials/Plant/Sublet 29314
- 728: Expenses: L4 integrated systems testing - Section 3 — Materials/Plant/Sublet 97712
- 819: Expenses: Section 2 occupancy inspection & handover — Materials/Plant/Sublet 20886
- 861: Expenses: Section 2 handover documentation & training — Materials/Plant/Sublet 24428
- 729: Expenses: L5 24 h load-bank test - Section 3 — Materials/Plant/Sublet 29314
- 735: Expenses: L4 integrated systems testing - Section 4 — Materials/Plant/Sublet 97712
- 825: Expenses: Section 3 occupancy inspection & handover — Materials/Plant/Sublet 20886
- 862: Expenses: Section 3 handover documentation & training — Materials/Plant/Sublet 24428
- 736: Expenses: L5 24 h load-bank test - Section 4 — Materials/Plant/Sublet 29314
- 863: Expenses: Section 4 handover documentation & training — Materials/Plant/Sublet 24428
- 833: Expenses: Section 4 occupancy inspection & handover — Materials/Plant/Sublet 20886
- 910: Expenses: NOC commissioning & final occupancy preparation (Condition 23) — Materials/Plant/Sublet 48856
