# Polaris DC-1 - Aviapolis Data Campus Phase 1

Schedule from Primavera P6, 2026-01-16 to 2030-01-01, data date 2026-09-16, costs in EUR.
Must finish by 2030-01-01

## Calendars

- Finnish 5-Day Site Calendar (holidays + summer shutdown): Mon-Fri 07:00-16:00; Sat-Sun off.
- 7-Day Fabrication & Shipping Calendar: Mon-Sun 00:00-24:00.

## Resources

| Resource | Group |
| --- | --- |
| Site Management | labor |
| Design Management | labor |
| Electrical Design | labor |
| Earthworks Crew | labor |
| Blasting Crew | labor |
| Civil Crew | labor |
| Concrete Crew | labor |
| Structural Steel Crew | labor |
| Steel & Precast Crew | labor |
| Envelope Crew | labor |
| Waterproofing Crew | labor |
| Electrical Crew | labor |
| Mechanical Crew | labor |
| Fire Protection Crew | labor |
| BMS Crew | labor |
| ICT Crew | labor |
| Fit-Out Crew | labor |
| Commissioning Team | labor |

## Schedule

| ID | WBS | Activity | Type | Duration | Start | Finish | Predecessors | Total float | Free float | Resources | Cost |
| --- | --- | --- | --- | --- | --- | --- | --- | --- | --- | --- | --- |
|  | 01-PRELIM | **Preliminaries, Mobilisation, Design & Permits** |  |  | 2026-03-02 | 2028-02-07 |  |  |  |  |  |
| A1000 |  | Project Start / Commencement Date | milestone | 0d | 2026-03-02 | 2026-03-02 |  | 74d | 0d |  |  |
| A1010 |  | Contract mobilisation: site establishment, offices, welfare, hoarding |  | 10d | 2026-03-02 | 2026-03-13 | A1000 | 554d | 0d | Site Management [540 h] | 1,141,828.77 |
| A1020 |  | Appoint & obtain Building Control approval of statutory supervisors (vastaava tyonjohtaja, KVV, IV) |  | 15d | 2026-03-02 | 2026-03-20 | A1000 | 96d | 0d | Design Management [405 h] | 60,000 |
| A1050 |  | S1 concept design: single-line diagrams, cooling strategy - prepare & submit |  | 20d | 2026-03-02 | 2026-03-27 | A1000 | 74d | 0d | Design Management [720 h] | 400,000 |
| A1120 |  | Design development & risk allowance (design tracker, ongoing coordination) |  | 300d | 2026-03-02 | 2027-06-01 | A1000 | 122d | 0d | Design Management [8100 h] | 400,000 |
| A9000 |  | Overheads, insurances/bonds & residual design-development/risk allowance (balance of Accepted Contract Amount, EUR 4,588,695) |  | 460d | 2026-03-02 | 2028-02-07 | A1000 | 0d |  | Site Management [4140 h] | 4,588,694.94 |
| A1030 |  | Temporary power, water, telecoms; site security setup |  | 10d | 2026-03-13 | 2026-03-26 | A1010 | 554d | 0d | Site Management [360 h] | 637,682.34 |
| A1040 |  | Mobilise tower/mobile cranage and site access/hoisting plant |  | 8d | 2026-03-13 | 2026-03-24 | A1010 | 556d | 0d | Site Management [288 h] | 948,298.47 |
| A1060 |  | M: S1 concept design submitted (Month 1 target) | milestone | 0d | 2026-03-27 | 2026-03-27 | A1050 | 74d | 0d |  |  |
| A1070 |  | Engineer review of S1 concept design (14-day contractual review) |  | 14d | 2026-03-27 | 2026-04-17 | A1060 | 74d | 0d | Design Management [126 h] |  |
| A1080 |  | S2 detailed design: all disciplines, calculations - prepare |  | 45d | 2026-04-17 | 2026-06-23 | A1070 | 329d | 0d | Design Management [3240 h] | 900,000 |
| A1300 |  | Prepare blast design, scaled-distance calcs & vibration monitoring plan (licensed blasting contractor) |  | 15d | 2026-04-17 | 2026-05-08 | A1070 | 74d | 0d | Design Management [270 h] | 30,000 |
| A1310 |  | Blasting notification (louhintailmoitus) to Vantaa rescue authority & Building Control |  | 15d | 2026-05-08 | 2026-05-29 | A1300 | 74d | 0d | Site Management [135 h] | 4,200 |
| A1320 |  | Pre-condition survey (katselmus) of neighbouring properties + 7-day notice |  | 10d | 2026-05-29 | 2026-06-11 | A1310 | 74d | 0d | Site Management [180 h] | 20,000 |
| A1330 |  | M: Blasting permit issued & pre-conditions complete | milestone | 0d | 2026-06-11 | 2026-06-11 | A1320 | 74d | 0d |  |  |
| A1090 |  | M: S2 detailed design submitted (Month 4 target) | milestone | 0d | 2026-06-23 | 2026-06-23 | A1080 | 329d | 0d |  |  |
| A1100 |  | Engineer review of S2 detailed design (21-day contractual review) |  | 21d | 2026-06-23 | 2026-08-11 | A1090 | 329d | 0d | Design Management [189 h] |  |
| A1110 |  | S3 construction-issue drawings, shop drawings, schedules per package (rolling) |  | 40d | 2026-08-11 | 2026-10-05 | A1100 | 361d | 0d | Design Management [2160 h] | 350,000 |
| A1200 |  | Prepare & submit Stage 1 protection coordination study to DNO |  | 15d | 2026-08-11 | 2026-08-31 | A1100 | 329d | 0d | Electrical Design [270 h] | 25,000 |
| A1210 |  | DNO review & approval of Stage 1 protection study (20 working days, contractual) |  | 20d | 2026-08-31 | 2026-09-25 | A1200 | 329d | 0d | Site Management [180 h] |  |
| A1220 |  | Submit request for spring 2027 110kV outage window (16 weeks' notice required) |  | 1d | 2026-09-25 | 2026-09-25 | A1210 | 371d | 0d | Site Management [9 h] |  |
| MS_DH_BOUNDARY |  | M: District-heating boundary works complete (Offtaker side, per PDC-DH-001 S7.1 - fixed external date 31 Aug 2027) | milestone | 0d | 2027-08-31 | 2027-08-31 | S1_WHR | 11d | 0d |  |  |
| MS_DH_TEST |  | M: 72-hour witnessed waste-heat delivery test (first available heating-season date, Oct2027-Apr2028, per PDC-DH-001 S6; contingent on Tenant IT load >=40%) | milestone | 0d | 2027-10-01 | 2027-10-01 | MS_DH_BOUNDARY FS+20d | 0d |  |  |  |

| ID | WBS | Activity | Type | Duration | Start | Finish | Predecessors | Total float | Free float | Calendar |
| --- | --- | --- | --- | --- | --- | --- | --- | --- | --- | --- |
|  | 03-PROC | **Procurement & Long-Lead Equipment** |  |  | 2026-01-16 | 2027-04-29 |  |  |  |  |
| PR01_ORD |  | Place order: 110/20kV transformers (2 nr, 16 MVA) | milestone | 0d | 2026-01-16 | 2026-01-16 |  | 123d | 0d |  |
| PR01_SHIP |  | Fabrication & shipping: 110/20kV transformers (2 nr, 16 MVA) (52 wk lead time) |  | 364d | 2026-01-16 | 2027-01-14 | PR01_ORD | 46.12d | 0d | 7-Day Fabrication & Shipping Calendar |
| PR11_ORD |  | Place order: Structural steel fabrication | milestone | 0d | 2026-04-10 | 2026-04-10 |  | 119d | 0d |  |
| PR11_SHIP |  | Fabrication & shipping: Structural steel fabrication (18 wk lead time) |  | 126d | 2026-04-10 | 2026-08-13 | PR11_ORD | 44.62d | 0d | 7-Day Fabrication & Shipping Calendar |
| PR02_ORD |  | Place order: 20kV switchgear & protection | milestone | 0d | 2026-05-08 | 2026-05-08 |  | 109d | 0d |  |
| PR02_SHIP |  | Fabrication & shipping: 20kV switchgear & protection (38 wk lead time) |  | 266d | 2026-05-08 | 2027-01-28 | PR02_ORD | 40.88d | 0d | 7-Day Fabrication & Shipping Calendar |
| PR03_ORD |  | Place order: Standby generators (8 nr, 2.5 MVA) | milestone | 0d | 2026-05-08 | 2026-05-08 |  | 108d | 0d |  |
| PR03_SHIP |  | Fabrication & shipping: Standby generators (8 nr, 2.5 MVA) (40 wk lead time) |  | 280d | 2026-05-08 | 2027-02-11 | PR03_ORD | 40.5d | 0d | 7-Day Fabrication & Shipping Calendar |
| PR12_ORD |  | Place order: Precast concrete wall panels | milestone | 0d | 2026-05-22 | 2026-05-22 |  | 123d | 0d |  |
| PR12_SHIP |  | Fabrication & shipping: Precast concrete wall panels (16 wk lead time) |  | 112d | 2026-05-22 | 2026-09-10 | PR12_ORD | 46.12d | 0d | 7-Day Fabrication & Shipping Calendar |
| PR04_ORD |  | Place order: UPS modules (16 nr, 1000 kVA) | milestone | 0d | 2026-07-31 | 2026-07-31 |  | 114d | 0d |  |
| PR04_SHIP |  | Fabrication & shipping: UPS modules (16 nr, 1000 kVA) (30 wk lead time) |  | 210d | 2026-07-31 | 2027-02-25 | PR04_ORD | 42.75d | 0d | 7-Day Fabrication & Shipping Calendar |
| PR07_ORD |  | Place order: Chillers (4 nr, N+1) | milestone | 0d | 2026-08-07 | 2026-08-07 |  | 67d | 0d |  |
| PR07_SHIP |  | Fabrication & shipping: Chillers (4 nr, N+1) (26 wk lead time) |  | 182d | 2026-08-07 | 2027-02-04 | PR07_ORD | 25.12d | 0d | 7-Day Fabrication & Shipping Calendar |
| PR11_DELIV |  | M: Structural steel fabrication - delivered to site | milestone | 0d | 2026-08-13 | 2026-08-13 | PR11_SHIP | 119d | 0d |  |
| PR12_DELIV |  | M: Precast concrete wall panels - delivered to site | milestone | 0d | 2026-09-10 | 2026-09-10 | PR12_SHIP | 123d | 0d |  |
| PR08_ORD |  | Place order: Dry coolers / adiabatic units (10 nr) | milestone | 0d | 2026-09-18 | 2026-09-18 |  | 53d | 0d |  |
| PR08_SHIP |  | Fabrication & shipping: Dry coolers / adiabatic units (10 nr) (22 wk lead time) |  | 154d | 2026-09-18 | 2027-02-18 | PR08_ORD | 19.88d | 0d | 7-Day Fabrication & Shipping Calendar |
| PR13_ORD |  | Place order: Acoustic louvres | milestone | 0d | 2026-09-18 | 2026-09-18 |  | 189d | 0d |  |
| PR13_SHIP |  | Fabrication & shipping: Acoustic louvres (16 wk lead time) |  | 112d | 2026-09-18 | 2027-01-07 | PR13_ORD | 70.88d | 0d | 7-Day Fabrication & Shipping Calendar |
| PR05_ORD |  | Place order: Battery systems (lithium-ion) | milestone | 0d | 2026-09-25 | 2026-09-25 |  | 204d | 0d |  |
| PR05_SHIP |  | Fabrication & shipping: Battery systems (lithium-ion) (24 wk lead time) |  | 168d | 2026-09-25 | 2027-03-11 | PR05_ORD | 76.5d | 0d | 7-Day Fabrication & Shipping Calendar |
| PR10_ORD |  | Place order: Waste-heat recovery plant (4 MW) | milestone | 0d | 2026-10-02 | 2026-10-02 |  | 107d | 0d |  |
| PR10_SHIP |  | Fabrication & shipping: Waste-heat recovery plant (4 MW) (30 wk lead time) |  | 210d | 2026-10-02 | 2027-04-29 | PR10_ORD | 40.12d | 0d | 7-Day Fabrication & Shipping Calendar |
| PR06_ORD |  | Place order: Overhead busway | milestone | 0d | 2026-10-16 | 2026-10-16 |  | 133d | 0d |  |
| PR06_SHIP |  | Fabrication & shipping: Overhead busway (20 wk lead time) |  | 140d | 2026-10-16 | 2027-03-04 | PR06_ORD | 49.88d | 0d | 7-Day Fabrication & Shipping Calendar |
| PR09_ORD |  | Place order: CRAH units (28 nr, N+1) | milestone | 0d | 2026-10-16 | 2026-10-16 |  | 41d | 0d |  |
| PR09_SHIP |  | Fabrication & shipping: CRAH units (28 nr, N+1) (22 wk lead time) |  | 154d | 2026-10-16 | 2027-03-18 | PR09_ORD | 15.38d | 0d | 7-Day Fabrication & Shipping Calendar |
| PR15_ORD |  | Place order: Fire suppression system (data halls) | milestone | 0d | 2026-11-06 | 2026-11-06 |  | 94d | 0d |  |
| PR15_SHIP |  | Fabrication & shipping: Fire suppression system (data halls) (20 wk lead time) |  | 140d | 2026-11-06 | 2027-03-25 | PR15_ORD | 35.25d | 0d | 7-Day Fabrication & Shipping Calendar |
| PR14_ORD |  | Place order: BMS/DCIM hardware & licences | milestone | 0d | 2026-12-11 | 2026-12-11 |  | 112d | 0d |  |
| PR14_SHIP |  | Fabrication & shipping: BMS/DCIM hardware & licences (16 wk lead time) |  | 112d | 2026-12-11 | 2027-04-01 | PR14_ORD | 42d | 0d | 7-Day Fabrication & Shipping Calendar |
| PR13_DELIV |  | M: Acoustic louvres - delivered to site | milestone | 0d | 2027-01-07 | 2027-01-07 | PR13_SHIP | 189d | 0d |  |
| PR01_DELIV |  | M: 110/20kV transformers (2 nr, 16 MVA) - delivered to site | milestone | 0d | 2027-01-14 | 2027-01-14 | PR01_SHIP | 123d | 0d |  |
| PR02_DELIV |  | M: 20kV switchgear & protection - delivered to site | milestone | 0d | 2027-01-28 | 2027-01-28 | PR02_SHIP | 109d | 0d |  |
| PR07_DELIV |  | M: Chillers (4 nr, N+1) - delivered to site | milestone | 0d | 2027-02-04 | 2027-02-04 | PR07_SHIP | 67d | 0d |  |
| PR03_DELIV |  | M: Standby generators (8 nr, 2.5 MVA) - delivered to site | milestone | 0d | 2027-02-11 | 2027-02-11 | PR03_SHIP | 108d | 0d |  |
| PR08_DELIV |  | M: Dry coolers / adiabatic units (10 nr) - delivered to site | milestone | 0d | 2027-02-18 | 2027-02-18 | PR08_SHIP | 53d | 0d |  |
| PR04_DELIV |  | M: UPS modules (16 nr, 1000 kVA) - delivered to site | milestone | 0d | 2027-02-25 | 2027-02-25 | PR04_SHIP | 114d | 0d |  |
| PR06_DELIV |  | M: Overhead busway - delivered to site | milestone | 0d | 2027-03-04 | 2027-03-04 | PR06_SHIP | 133d | 0d |  |
| PR05_DELIV |  | M: Battery systems (lithium-ion) - delivered to site | milestone | 0d | 2027-03-11 | 2027-03-11 | PR05_SHIP | 204d | 0d |  |
| PR09_DELIV |  | M: CRAH units (28 nr, N+1) - delivered to site | milestone | 0d | 2027-03-18 | 2027-03-18 | PR09_SHIP | 41d | 0d |  |
| PR15_DELIV |  | M: Fire suppression system (data halls) - delivered to site | milestone | 0d | 2027-03-25 | 2027-03-25 | PR15_SHIP | 94d | 0d |  |
| PR14_DELIV |  | M: BMS/DCIM hardware & licences - delivered to site | milestone | 0d | 2027-04-01 | 2027-04-01 | PR14_SHIP | 112d | 0d |  |
| PR10_DELIV |  | M: Waste-heat recovery plant (4 MW) - delivered to site | milestone | 0d | 2027-04-29 | 2027-04-29 | PR10_SHIP | 107d | 0d |  |

| ID | WBS | Activity | Type | Duration | Start | Finish | Predecessors | Total float | Free float | Resources | Cost |
| --- | --- | --- | --- | --- | --- | --- | --- | --- | --- | --- | --- |
|  | 04-ENABLE | **Site-Wide Enabling Works (Earthworks, Blasting, Utilities)** |  |  | 2026-03-20 | 2026-09-15 |  |  |  |  |  |
| A2000 |  | Site clearance, topsoil strip & disposal (26,565 m2, site-wide) |  | 7d | 2026-03-20 | 2026-03-30 | A1020 | 96d | 0d | Earthworks Crew [1008 h] | 168,512.26 |
| A2070 |  | Site haul road (gridline N) & temporary access - enabling logistics |  | 10d | 2026-03-30 | 2026-04-14 | A2000 | 425d | 0d | Civil Crew [540 h] | 150,000 |
| A2010 |  | Bulk excavation in glacial till, cart away (19,255.5 m3, site-wide, west-to-east) |  | 39d | 2026-04-07 | 2026-06-02 | A2000 FS+5d | 93d | 0d | Earthworks Crew [5616 h] | 538,020.62 |
| A2020 |  | Excavate unrecorded made ground, NW corner (1,620 m3 provisional) + archaeology watching-brief allowance |  | 7d | 2026-04-13 | 2026-04-21 | A2010 SS+5d | 528d | 0d | Earthworks Crew [504 h] | 102,762.98 |
| A2050 |  | Ground/dewatering: sump pumping & well-pointing allowance, site-wide (concurrent with substructure) |  | 60d | 2026-06-02 | 2026-09-15 | A2010 | 381d | 0d | Earthworks Crew [2160 h] | 362,479.65 |
| A2060 |  | Sub-base, capping & geotextile to slab areas, phased with foundations (12,837 m2) |  | 26d | 2026-06-08 | 2026-08-04 | A2010 FS+5d | 423d | 0d | Earthworks Crew [2808 h] | 659,196.44 |
| A2030 |  | Rock excavation by controlled blasting, east zone (Hall 4 + generator compound footprint, 3,213.6 m3) |  | 27d | 2026-06-11 | 2026-08-10 | A1330, A2010 FS-10d | 74d | 0d | Blasting Crew [1458 h] | 465,945.85 |
| A2040 |  | M: East-zone rock excavation complete (unlocks generator compound & Hall 4 foundations) | milestone | 0d | 2026-08-10 | 2026-08-10 | A2030 | 74d | 0d |  |  |
|  | 05-SEC1 | **Section 1 - Hall 1 & Shared Infrastructure** |  |  | 2026-04-24 | 2027-05-27 |  |  |  |  |  |
| S1_GATEHOUSE |  | Section 1: security gatehouse, perimeter fence, ANPR gate, site access road |  | 20d | 2026-04-24 | 2026-05-25 | A2070 FS+10d | 425d | 0d | Civil Crew [1080 h] | 1,011,371.16 |
| S1_SUB |  | Section 1 - Hall 1 & Shared Infrastructure: substructure - foundations, ground beams, slab-on-grade |  | 29d | 2026-08-17 | 2026-09-24 | A2040 FS+5d | 72d | 0d | Concrete Crew [4176 h] | 1,617,000 |
| S1_STEEL |  | Section 1 - Hall 1 & Shared Infrastructure: structural steel erection (298 t) |  | 22d | 2026-09-29 | 2026-10-28 | S1_SUB FS+5d, PR11_DELIV | 72d | 0d | Structural Steel Crew [1980 h] | 4,122,045.33 |
| S1_PRECAST |  | Section 1 - Hall 1 & Shared Infrastructure: precast wall panel erection (212 panels) |  | 27d | 2026-11-02 | 2026-12-08 | S1_STEEL FS+3d, PR12_DELIV | 70d | 0d | Steel & Precast Crew [1458 h] |  |
| S1_CLAD |  | Section 1 - Hall 1 & Shared Infrastructure: insulated cladding & envelope insulation (1651 m2) |  | 21d | 2026-12-08 | 2027-01-11 | S1_TOPOUT | 70d | 0d | Envelope Crew [1134 h] | 1,386,000 |
| S1_ROOF |  | Section 1 - Hall 1 & Shared Infrastructure: warm roof build-up & membrane (1728 m2) |  | 12d | 2026-12-08 | 2026-12-23 | S1_TOPOUT | 125d | 0d | Waterproofing Crew [432 h] |  |
| S1_TOPOUT |  | M: Section 1 - Hall 1 & Shared Infrastructure structural topping out | milestone | 0d | 2026-12-08 | 2026-12-08 | S1_PRECAST | 70d | 0d |  |  |
| S1_LOUVRES |  | Section 1: acoustic louvres to cooling intake/discharge |  | 8d | 2027-01-11 | 2027-01-20 | S1_WEATHERTIGHT, PR13_DELIV | 185d | 0d | Envelope Crew [288 h] | 575,756.37 |
| S1_WEATHERTIGHT |  | M: Section 1 - Hall 1 & Shared Infrastructure weathertight & enclosed | milestone | 0d | 2027-01-11 | 2027-01-11 | S1_CLAD, S1_ROOF | 106d | 0d |  |  |
| S1_FINISHES |  | Section 1 - Hall 1 & Shared Infrastructure: data hall floor finish & cold-aisle containment (1250 m2) |  | 5d | 2027-01-18 | 2027-01-22 | S1_WEATHERTIGHT FS+5d | 183d | 0d | Fit-Out Crew [360 h] | 569,522.33 |
| S1_SUBSTATION |  | Section 1: primary substation & 110/20kV transformer/switchgear installation & termination (2 crews) |  | 18d | 2027-01-28 | 2027-02-22 | S1_WEATHERTIGHT FS-15d, PR01_DELIV, PR02_DELIV | 109d | 0d | Electrical Crew [1944 h] | 5,393,553.7 |
| S1_GENSETS |  | Section 1: standby generator installation, paralleling, ATS & fuel system (8 nr, 2 crews) |  | 15d | 2027-02-11 | 2027-03-03 | PR03_DELIV, S1_WEATHERTIGHT FS-10d | 108d | 0d | Electrical Crew [1620 h] | 10,841,418.92 |
| S1_CHILLER |  | Section 1 - Hall 1 & Shared Infrastructure: chiller / dry-cooler yard bay installation |  | 10d | 2027-02-18 | 2027-03-03 | S1_WEATHERTIGHT FS-15d, PR07_DELIV, PR08_DELIV | 53d | 0d | Mechanical Crew [540 h] | 1,287,799.53 |
| S1_HALLSUB |  | Section 1 - Hall 1 & Shared Infrastructure: hall substation 20/0.4kV, LV switchboard & distribution (2 crews) |  | 6d | 2027-02-26 | 2027-03-05 | S1_SUBSTATION FS+3d, S1_GENSETS FS-5d | 108d | 0d | Electrical Crew [648 h] | 589,071.32 |
| S1_CABLING |  | Section 1 - Hall 1 & Shared Infrastructure: containment, cabling, small power & lighting (400 points, 2 crews) |  | 5d | 2027-03-01 | 2027-03-05 | S1_HALLSUB SS+3d | 111d | 0d | Electrical Crew [720 h] | 584,893.51 |
| S1_UPS |  | Section 1 - Hall 1 & Shared Infrastructure: UPS modules & battery system installation (N+1, 4x1.0MVA) |  | 10d | 2027-03-01 | 2027-03-12 | S1_CABLING FS-5d, PR04_DELIV | 110d | 0d | Electrical Crew [540 h] | 1,052,808.31 |
| S1_SECURITY |  | Section 1 - Hall 1 & Shared Infrastructure: access control, CCTV, five-layer security tie-in (parallel with fire/BMS) |  | 8d | 2027-03-04 | 2027-03-15 | S1_CABLING SS+3d | 120d | 0d | ICT Crew [288 h] | 365,732.48 |
| S1_BUSWAY |  | Section 1 - Hall 1 & Shared Infrastructure: overhead busway to rack PDUs (240 m) |  | 8d | 2027-03-08 | 2027-03-17 | S1_HALLSUB FS+1d, PR06_DELIV | 129d | 0d | Electrical Crew [432 h] | 155,414.56 |
| S1_CRAH |  | Section 1 - Hall 1 & Shared Infrastructure: CRAH units & pipework, cold-aisle containment tie-in (7 nr) |  | 18d | 2027-03-18 | 2027-04-14 | S1_CHILLER FS+3d, PR09_DELIV | 41d | 0d | Mechanical Crew [1944 h] | 1,566,385.17 |
| S1_DUCT |  | Section 1 - Hall 1 & Shared Infrastructure: ventilation ductwork, ancillary areas (runs concurrent with CRAH - different zones) |  | 9d | 2027-03-23 | 2027-04-06 | S1_CRAH SS+5d | 79d | 0d | Mechanical Crew [486 h] | 624,100.71 |
| S1_FIRE |  | Section 1 - Hall 1 & Shared Infrastructure: fire detection & suppression (aspirating + gas/mist, 1 zone, 2 crews) |  | 7d | 2027-04-06 | 2027-04-14 | S1_CABLING SS+3d, S1_DUCT, PR15_DELIV | 82d | 0d | Fire Protection Crew [756 h] | 489,562.02 |
| S1_BMS |  | Section 1 - Hall 1 & Shared Infrastructure: BMS/DCIM integration, alarm hierarchy & cause-effect witnessing |  | 3d | 2027-04-14 | 2027-04-16 | S1_FIRE, PR14_DELIV | 99d | 0d | BMS Crew [108 h] | 378,200.64 |
| S1_L3 |  | Section 1 - Hall 1 & Shared Infrastructure: L3 individual component start-up & functional test (2 crews) |  | 7d | 2027-04-16 | 2027-04-26 | S1_FINISHES, S1_UPS, S1_FIRE, S1_BMS, S1_SECURITY, S1_DUCT, S1_BUSWAY, S1_LOUVRES, S1_GATEHOUSE, S1_GENSETS | 99d | 0d | Commissioning Team [504 h] | 85,259.03 |
| S1_L4 |  | Section 1 - Hall 1 & Shared Infrastructure: L4 integrated systems testing incl. black-building & failure-mode (ATS) tests |  | 2d | 2027-04-26 | 2027-04-27 | S1_L3, A1210 | 116d | 0d | Commissioning Team [72 h] | 136,414.45 |
| S1_L5 |  | Section 1 - Hall 1 & Shared Infrastructure: L5 integrated load-bank testing, 24h continuous at full Section load |  | 5d | 2027-04-29 | 2027-05-05 | S1_L4 FS+2d | 116d | 0d | Commissioning Team [180 h] | 180,261.95 |
| S1_WHR |  | Section 1: waste-heat recovery plant mechanical install & connection to boundary chamber (4MW) |  | 20d | 2027-04-29 | 2027-05-27 | PR10_DELIV, S1_CHILLER | 107d | 0d | Mechanical Crew [1080 h] | 4,970,768.44 |
| S1_OCC |  | Section 1 - Hall 1 & Shared Infrastructure: sectional occupancy inspection (kayttoonottotarkastus) & Tenant technical acceptance - 5-day statutory notice overlaps L5 tail |  | 5d | 2027-05-03 | 2027-05-10 | S1_L5 SS+2d | 114d | 0d | Site Management [90 h] | 97,410.47 |
| S1_TOC |  | M: Section 1 - Hall 1 & Shared Infrastructure - TAKING OVER (contractual Time for Completion) | milestone | 0d | 2027-05-10 | 2027-05-10 | S1_OCC | 144d | 0d |  |  |

| ID | WBS | Activity | Type | Duration | Start | Finish | Predecessors | Total float | Free float | Resources | Cost |
| --- | --- | --- | --- | --- | --- | --- | --- | --- | --- | --- | --- |
|  | 06-SEC2 | **Section 2 - Hall 2** |  |  | 2026-09-07 | 2027-06-15 |  |  |  |  |  |
| S2_SUB |  | Section 2 - Hall 2: substructure - foundations, ground beams, slab-on-grade |  | 20d | 2026-09-07 | 2026-10-02 | A2010 FS+5d, S1_SUB SS+20d | 157d | 0d | Concrete Crew [2880 h] | 1,617,000 |
| S2_STEEL |  | Section 2 - Hall 2: structural steel erection (112 t) |  | 9d | 2026-11-02 | 2026-11-12 | S2_SUB FS+5d, S1_STEEL FS+5d | 131d | 0d | Structural Steel Crew [810 h] | 1,551,984.89 |
| S2_PRECAST |  | Section 2 - Hall 2: precast wall panel erection (64 panels) |  | 8d | 2026-12-11 | 2026-12-22 | S2_STEEL FS+3d, S1_PRECAST FS+3d | 105d | 0d | Steel & Precast Crew [432 h] |  |
| S2_TOPOUT |  | M: Section 2 - Hall 2 structural topping out | milestone | 0d | 2026-12-22 | 2026-12-22 | S2_PRECAST | 105d | 0d |  |  |
| S2_ROOF |  | Section 2 - Hall 2: warm roof build-up & membrane (1728 m2) |  | 12d | 2027-01-07 | 2027-01-22 | S2_TOPOUT, S1_ROOF FS+15d | 131d | 0d | Waterproofing Crew [432 h] |  |
| S2_CLAD |  | Section 2 - Hall 2: insulated cladding & envelope insulation (1651 m2) |  | 21d | 2027-01-26 | 2027-02-23 | S2_TOPOUT, S1_CLAD FS+15d | 70d | 0d | Envelope Crew [1134 h] | 1,386,000 |
| S2_WEATHERTIGHT |  | M: Section 2 - Hall 2 weathertight & enclosed | milestone | 0d | 2027-02-23 | 2027-02-23 | S2_CLAD, S2_ROOF | 100d | 0d |  |  |
| S2_FINISHES |  | Section 2 - Hall 2: data hall floor finish & cold-aisle containment (1250 m2) |  | 5d | 2027-03-01 | 2027-03-05 | S2_WEATHERTIGHT FS+5d, S1_FINISHES FS+12d | 157d | 0d | Fit-Out Crew [360 h] | 569,522.33 |
| S2_CHILLER |  | Section 2 - Hall 2: chiller / dry-cooler yard bay installation |  | 10d | 2027-03-18 | 2027-04-02 | S2_WEATHERTIGHT FS-15d, S1_CHILLER FS+15d | 62d | 0d | Mechanical Crew [540 h] | 1,287,799.53 |
| S2_HALLSUB |  | Section 2 - Hall 2: hall substation 20/0.4kV, LV switchboard & distribution (2 crews) |  | 6d | 2027-03-22 | 2027-03-31 | S2_WEATHERTIGHT FS+3d, S1_SUBSTATION FS+3d, S1_HALLSUB FS+15d | 106d | 0d | Electrical Crew [648 h] | 589,071.32 |
| S2_CABLING |  | Section 2 - Hall 2: containment, cabling, small power & lighting (400 points, 2 crews) |  | 5d | 2027-03-25 | 2027-04-02 | S2_HALLSUB SS+3d, S1_CABLING FS+12d | 106d | 0d | Electrical Crew [720 h] | 584,893.51 |
| S2_SECURITY |  | Section 2 - Hall 2: access control, CCTV, five-layer security tie-in (parallel with fire/BMS) |  | 8d | 2027-03-30 | 2027-04-08 | S2_CABLING SS+3d, S1_SECURITY FS+10d | 115d | 0d | ICT Crew [288 h] | 365,732.48 |
| S2_UPS |  | Section 2 - Hall 2: UPS modules & battery system installation (N+1, 4x1.0MVA) |  | 10d | 2027-03-30 | 2027-04-12 | S2_CABLING FS-5d, S1_UPS FS+12d | 104d | 0d | Electrical Crew [540 h] | 1,052,808.31 |
| S2_BUSWAY |  | Section 2 - Hall 2: overhead busway to rack PDUs (240 m) |  | 8d | 2027-04-01 | 2027-04-12 | S2_HALLSUB FS+1d | 121d | 0d | Electrical Crew [432 h] | 155,414.56 |
| S2_CRAH |  | Section 2 - Hall 2: CRAH units & pipework, cold-aisle containment tie-in (7 nr) |  | 18d | 2027-04-26 | 2027-05-20 | S2_CHILLER FS+3d, S1_CRAH FS+12d | 41d | 0d | Mechanical Crew [1944 h] | 1,566,385.17 |
| S2_DUCT |  | Section 2 - Hall 2: ventilation ductwork, ancillary areas (runs concurrent with CRAH - different zones) |  | 9d | 2027-05-03 | 2027-05-14 | S2_CRAH SS+5d, S1_DUCT FS+12d | 64d | 0d | Mechanical Crew [486 h] | 624,100.71 |
| S2_FIRE |  | Section 2 - Hall 2: fire detection & suppression (aspirating + gas/mist, 1 zone, 2 crews) |  | 7d | 2027-05-14 | 2027-05-24 | S2_CABLING SS+3d, S2_DUCT, S1_FIRE FS+12d | 64d | 0d | Fire Protection Crew [756 h] | 489,562.02 |
| S2_BMS |  | Section 2 - Hall 2: BMS/DCIM integration, alarm hierarchy & cause-effect witnessing |  | 3d | 2027-05-24 | 2027-05-26 | S2_FIRE, S1_BMS FS+8d | 77d | 0d | BMS Crew [108 h] | 378,200.64 |
| S2_L3 |  | Section 2 - Hall 2: L3 individual component start-up & functional test (2 crews) |  | 7d | 2027-05-26 | 2027-06-03 | S2_FINISHES, S2_UPS, S2_FIRE, S2_BMS, S2_SECURITY, S2_DUCT, S2_BUSWAY, S1_L3 FS+8d | 77d | 0d | Commissioning Team [504 h] | 85,259.03 |
| S2_L4 |  | Section 2 - Hall 2: L4 integrated systems testing incl. black-building & failure-mode (ATS) tests |  | 2d | 2027-06-03 | 2027-06-04 | S2_L3, A1210, S1_L4 FS+4d | 89d | 0d | Commissioning Team [72 h] | 136,414.45 |
| S2_L5 |  | Section 2 - Hall 2: L5 integrated load-bank testing, 24h continuous at full Section load |  | 5d | 2027-06-07 | 2027-06-11 | S2_L4 FS+2d, S1_L5 FS+4d | 88d | 0d | Commissioning Team [180 h] | 180,261.95 |
| S2_OCC |  | Section 2 - Hall 2: sectional occupancy inspection (kayttoonottotarkastus) & Tenant technical acceptance - 5-day statutory notice overlaps L5 tail |  | 5d | 2027-06-09 | 2027-06-15 | S2_L5 SS+2d, S1_OCC FS+4d | 88d | 0d | Site Management [90 h] | 97,410.47 |
| S2_TOC |  | M: Section 2 - Hall 2 - TAKING OVER (contractual Time for Completion) | milestone | 0d | 2027-06-15 | 2027-06-15 | S2_OCC | 108d | 0d |  |  |

| ID | WBS | Activity | Type | Duration | Start | Finish | Predecessors | Total float | Free float | Resources | Cost |
| --- | --- | --- | --- | --- | --- | --- | --- | --- | --- | --- | --- |
|  | 07-SEC3 | **Section 3 - Hall 3** |  |  | 2026-09-28 | 2027-08-10 |  |  |  |  |  |
| S3_SUB |  | Section 3 - Hall 3: substructure - foundations, ground beams, slab-on-grade |  | 20d | 2026-09-28 | 2026-10-23 | A2010 FS+5d, S2_SUB SS+20d | 179d | 0d | Concrete Crew [2880 h] | 1,617,000 |
| S3_STEEL |  | Section 3 - Hall 3: structural steel erection (112 t) |  | 9d | 2026-11-17 | 2026-11-27 | S3_SUB FS+5d, S2_STEEL FS+5d | 159d | 0d | Structural Steel Crew [810 h] | 1,551,984.89 |
| S3_PRECAST |  | Section 3 - Hall 3: precast wall panel erection (64 panels) |  | 8d | 2026-12-28 | 2027-01-08 | S3_STEEL FS+3d, S2_PRECAST FS+3d | 131d | 0d | Steel & Precast Crew [432 h] |  |
| S3_TOPOUT |  | M: Section 3 - Hall 3 structural topping out | milestone | 0d | 2027-01-08 | 2027-01-08 | S3_PRECAST | 131d | 0d |  |  |
| S3_ROOF |  | Section 3 - Hall 3: warm roof build-up & membrane (1728 m2) |  | 12d | 2027-02-08 | 2027-02-23 | S3_TOPOUT, S2_ROOF FS+15d | 129d | 0d | Waterproofing Crew [432 h] |  |
| S3_CLAD |  | Section 3 - Hall 3: insulated cladding & envelope insulation (1651 m2) |  | 21d | 2027-03-10 | 2027-04-09 | S3_TOPOUT, S2_CLAD FS+15d | 70d | 0d | Envelope Crew [1134 h] | 1,386,000 |
| S3_WEATHERTIGHT |  | M: Section 3 - Hall 3 weathertight & enclosed | milestone | 0d | 2027-04-09 | 2027-04-09 | S3_CLAD, S3_ROOF | 95d | 0d |  |  |
| S3_FINISHES |  | Section 3 - Hall 3: data hall floor finish & cold-aisle containment (1250 m2) |  | 5d | 2027-04-14 | 2027-04-20 | S3_WEATHERTIGHT FS+5d, S2_FINISHES FS+12d | 129d | 0d | Fit-Out Crew [360 h] | 569,522.33 |
| S3_HALLSUB |  | Section 3 - Hall 3: hall substation 20/0.4kV, LV switchboard & distribution (2 crews) |  | 6d | 2027-04-15 | 2027-04-22 | S3_WEATHERTIGHT FS+3d, S1_SUBSTATION FS+3d, S2_HALLSUB FS+15d | 109d | 0d | Electrical Crew [648 h] | 589,071.32 |
| S3_CABLING |  | Section 3 - Hall 3: containment, cabling, small power & lighting (400 points, 2 crews) |  | 5d | 2027-04-19 | 2027-04-23 | S3_HALLSUB SS+3d, S2_CABLING FS+12d | 108d | 0d | Electrical Crew [720 h] | 584,893.51 |
| S3_CHILLER |  | Section 3 - Hall 3: chiller / dry-cooler yard bay installation |  | 10d | 2027-04-19 | 2027-04-30 | S3_WEATHERTIGHT FS-15d, S2_CHILLER FS+15d | 70d | 0d | Mechanical Crew [540 h] | 1,287,799.53 |
| S3_SECURITY |  | Section 3 - Hall 3: access control, CCTV, five-layer security tie-in (parallel with fire/BMS) |  | 8d | 2027-04-22 | 2027-05-03 | S3_CABLING SS+3d, S2_SECURITY FS+10d | 111d | 0d | ICT Crew [288 h] | 365,732.48 |
| S3_BUSWAY |  | Section 3 - Hall 3: overhead busway to rack PDUs (240 m) |  | 8d | 2027-04-23 | 2027-05-04 | S3_HALLSUB FS+1d | 115d | 0d | Electrical Crew [432 h] | 155,414.56 |
| S3_UPS |  | Section 3 - Hall 3: UPS modules & battery system installation (N+1, 4x1.0MVA) |  | 10d | 2027-04-26 | 2027-05-10 | S3_CABLING FS-5d, S2_UPS FS+12d | 102d | 0d | Electrical Crew [540 h] | 1,052,808.31 |
| S3_CRAH |  | Section 3 - Hall 3: CRAH units & pipework, cold-aisle containment tie-in (7 nr) |  | 18d | 2027-06-01 | 2027-06-24 | S3_CHILLER FS+3d, S2_CRAH FS+12d | 41d | 0d | Mechanical Crew [1944 h] | 1,566,385.17 |
| S3_DUCT |  | Section 3 - Hall 3: ventilation ductwork, ancillary areas (runs concurrent with CRAH - different zones) |  | 9d | 2027-06-07 | 2027-06-17 | S3_CRAH SS+5d, S2_DUCT FS+12d | 52d | 0d | Mechanical Crew [486 h] | 624,100.71 |
| S3_FIRE |  | Section 3 - Hall 3: fire detection & suppression (aspirating + gas/mist, 1 zone, 2 crews) |  | 7d | 2027-06-17 | 2027-06-28 | S3_CABLING SS+3d, S3_DUCT, S2_FIRE FS+12d | 52d | 0d | Fire Protection Crew [756 h] | 489,562.02 |
| S3_BMS |  | Section 3 - Hall 3: BMS/DCIM integration, alarm hierarchy & cause-effect witnessing |  | 3d | 2027-06-28 | 2027-06-30 | S3_FIRE, S2_BMS FS+8d | 58d | 0d | BMS Crew [108 h] | 378,200.64 |
| S3_L3 |  | Section 3 - Hall 3: L3 individual component start-up & functional test (2 crews) |  | 7d | 2027-06-30 | 2027-07-08 | S3_FINISHES, S3_UPS, S3_FIRE, S3_BMS, S3_SECURITY, S3_DUCT, S3_BUSWAY, S2_L3 FS+8d | 58d | 0d | Commissioning Team [504 h] | 85,259.03 |
| S3_L4 |  | Section 3 - Hall 3: L4 integrated systems testing incl. black-building & failure-mode (ATS) tests |  | 2d | 2027-07-08 | 2027-07-09 | S3_L3, A1210, S2_L4 FS+4d | 64d | 0d | Commissioning Team [72 h] | 136,414.45 |
| S3_L5 |  | Section 3 - Hall 3: L5 integrated load-bank testing, 24h continuous at full Section load |  | 5d | 2027-08-02 | 2027-08-06 | S3_L4 FS+2d, S2_L5 FS+4d | 42d | 0d | Commissioning Team [180 h] | 180,261.95 |
| S3_OCC |  | Section 3 - Hall 3: sectional occupancy inspection (kayttoonottotarkastus) & Tenant technical acceptance - 5-day statutory notice overlaps L5 tail |  | 5d | 2027-08-04 | 2027-08-10 | S3_L5 SS+2d, S2_OCC FS+4d | 42d | 0d | Site Management [90 h] | 97,410.47 |
| S3_TOC |  | M: Section 3 - Hall 3 - TAKING OVER (contractual Time for Completion) | milestone | 0d | 2027-08-10 | 2027-08-10 | S3_OCC | 52d | 0d |  |  |

| ID | WBS | Activity | Type | Duration | Start | Finish | Predecessors | Total float | Free float | Resources | Cost |
| --- | --- | --- | --- | --- | --- | --- | --- | --- | --- | --- | --- |
|  | 08-SEC4 | **Section 4 - Hall 4, Admin/NOC & External Works** |  |  | 2026-10-19 | 2027-09-14 |  |  |  |  |  |
| S4_SUB |  | Section 4 - Hall 4, Admin/NOC, External Works & Landscaping: substructure - foundations, ground beams, slab-on-grade |  | 29d | 2026-10-19 | 2026-11-26 | A2040 FS+5d, S3_SUB SS+20d | 190d | 0d | Concrete Crew [4176 h] | 1,617,000 |
| S4_STEEL |  | Section 4 - Hall 4, Admin/NOC, External Works & Landscaping: structural steel erection (112 t) |  | 9d | 2026-12-02 | 2026-12-14 | S4_SUB FS+5d, S3_STEEL FS+5d | 189d | 0d | Structural Steel Crew [810 h] | 1,551,984.89 |
| S4_PRECAST |  | Section 4 - Hall 4, Admin/NOC, External Works & Landscaping: precast wall panel erection (64 panels) |  | 8d | 2027-01-11 | 2027-01-20 | S4_STEEL FS+3d, S3_PRECAST FS+3d | 164d | 0d | Steel & Precast Crew [432 h] |  |
| S4_TOPOUT |  | M: Section 4 - Hall 4, Admin/NOC, External Works & Landscaping structural topping out | milestone | 0d | 2027-01-20 | 2027-01-20 | S4_PRECAST | 164d | 0d |  |  |
| S4_ROOF |  | Section 4 - Hall 4, Admin/NOC, External Works & Landscaping: warm roof build-up & membrane (1728 m2) |  | 12d | 2027-03-10 | 2027-03-25 | S4_TOPOUT, S3_ROOF FS+15d | 129d | 0d | Waterproofing Crew [432 h] |  |
| S4_CLAD |  | Section 4 - Hall 4, Admin/NOC, External Works & Landscaping: insulated cladding & envelope insulation (1651 m2) |  | 21d | 2027-04-26 | 2027-05-25 | S4_TOPOUT, S3_CLAD FS+15d | 68d | 0d | Envelope Crew [1134 h] | 1,386,000 |
| S4_CHILLER |  | Section 4 - Hall 4, Admin/NOC, External Works & Landscaping: chiller / dry-cooler yard bay installation |  | 10d | 2027-05-17 | 2027-05-28 | S4_WEATHERTIGHT FS-15d, S3_CHILLER FS+15d | 77d | 0d | Mechanical Crew [540 h] | 1,287,799.53 |
| S4_ADMIN |  | Section 4: admin/NOC block fit-out (2-storey, 1,250 m2) |  | 30d | 2027-05-25 | 2027-07-06 | S4_WEATHERTIGHT | 68d | 0d | Fit-Out Crew [2160 h] | 1,636,184.86 |
| S4_EXTERNAL |  | Section 4: external works - roads, drainage, fibre entry, landscaping & tree replacement |  | 25d | 2027-05-25 | 2027-06-29 | A2040, S4_WEATHERTIGHT SS | 75d | 0d | Civil Crew [2700 h] | 2,576,978.37 |
| S4_WEATHERTIGHT |  | M: Section 4 - Hall 4, Admin/NOC, External Works & Landscaping weathertight & enclosed | milestone | 0d | 2027-05-25 | 2027-05-25 | S4_CLAD, S4_ROOF | 68d | 0d |  |  |
| S4_HALLSUB |  | Section 4 - Hall 4, Admin/NOC, External Works & Landscaping: hall substation 20/0.4kV, LV switchboard & distribution (2 crews) |  | 6d | 2027-05-28 | 2027-06-04 | S4_WEATHERTIGHT FS+3d, S1_SUBSTATION FS+3d, S3_HALLSUB FS+15d | 89d | 0d | Electrical Crew [648 h] | 589,071.32 |
| S4_CABLING |  | Section 4 - Hall 4, Admin/NOC, External Works & Landscaping: containment, cabling, small power & lighting (400 points, 2 crews) |  | 5d | 2027-05-31 | 2027-06-04 | S4_HALLSUB SS+3d, S3_CABLING FS+12d | 89d | 0d | Electrical Crew [720 h] | 584,893.51 |
| S4_FINISHES |  | Section 4 - Hall 4, Admin/NOC, External Works & Landscaping: data hall floor finish & cold-aisle containment (1250 m2) |  | 5d | 2027-05-31 | 2027-06-04 | S4_WEATHERTIGHT FS+5d, S3_FINISHES FS+12d | 100d | 0d | Fit-Out Crew [360 h] | 569,522.33 |
| S4_UPS |  | Section 4 - Hall 4, Admin/NOC, External Works & Landscaping: UPS modules & battery system installation (N+1, 4x1.0MVA) |  | 10d | 2027-05-31 | 2027-06-11 | S4_CABLING FS-5d, S3_UPS FS+12d | 93d | 0d | Electrical Crew [540 h] | 1,052,808.31 |
| S4_SECURITY |  | Section 4 - Hall 4, Admin/NOC, External Works & Landscaping: access control, CCTV, five-layer security tie-in (parallel with fire/BMS) |  | 8d | 2027-06-03 | 2027-06-14 | S4_CABLING SS+3d, S3_SECURITY FS+10d | 90d | 0d | ICT Crew [288 h] | 365,732.48 |
| S4_BUSWAY |  | Section 4 - Hall 4, Admin/NOC, External Works & Landscaping: overhead busway to rack PDUs (240 m) |  | 8d | 2027-06-07 | 2027-06-16 | S4_HALLSUB FS+1d | 88d | 0d | Electrical Crew [432 h] | 155,414.56 |
| S4_CRAH |  | Section 4 - Hall 4, Admin/NOC, External Works & Landscaping: CRAH units & pipework, cold-aisle containment tie-in (7 nr) |  | 18d | 2027-07-06 | 2027-08-19 | S4_CHILLER FS+3d, S3_CRAH FS+12d | 41d | 0d | Mechanical Crew [1944 h] | 1,566,385.17 |
| S4_DUCT |  | Section 4 - Hall 4, Admin/NOC, External Works & Landscaping: ventilation ductwork, ancillary areas (runs concurrent with CRAH - different zones) |  | 9d | 2027-08-02 | 2027-08-12 | S4_CRAH SS+5d, S3_DUCT FS+12d | 19d | 0d | Mechanical Crew [486 h] | 624,100.71 |
| S4_FIRE |  | Section 4 - Hall 4, Admin/NOC, External Works & Landscaping: fire detection & suppression (aspirating + gas/mist, 1 zone, 2 crews) |  | 7d | 2027-08-12 | 2027-08-20 | S4_CABLING SS+3d, S4_DUCT, S3_FIRE FS+12d | 19d | 0d | Fire Protection Crew [756 h] | 489,562.02 |
| S4_BMS |  | Section 4 - Hall 4, Admin/NOC, External Works & Landscaping: BMS/DCIM integration, alarm hierarchy & cause-effect witnessing |  | 3d | 2027-08-20 | 2027-08-24 | S4_FIRE, S3_BMS FS+8d | 19d | 0d | BMS Crew [108 h] | 378,200.64 |
| S4_L3 |  | Section 4 - Hall 4, Admin/NOC, External Works & Landscaping: L3 individual component start-up & functional test (2 crews) |  | 7d | 2027-08-24 | 2027-09-01 | S4_FINISHES, S4_UPS, S4_FIRE, S4_BMS, S4_SECURITY, S4_DUCT, S4_BUSWAY, S4_ADMIN, S4_EXTERNAL, S3_L3 FS+8d | 19d | 0d | Commissioning Team [504 h] | 85,259.03 |
| S4_L4 |  | Section 4 - Hall 4, Admin/NOC, External Works & Landscaping: L4 integrated systems testing incl. black-building & failure-mode (ATS) tests |  | 2d | 2027-09-01 | 2027-09-02 | S4_L3, A1210, S3_L4 FS+4d | 19d | 0d | Commissioning Team [72 h] | 136,414.45 |
| S4_L5 |  | Section 4 - Hall 4, Admin/NOC, External Works & Landscaping: L5 integrated load-bank testing, 24h continuous at full Section load |  | 5d | 2027-09-06 | 2027-09-10 | S4_L4 FS+2d, S3_L5 FS+4d | 17d | 0d | Commissioning Team [180 h] | 180,261.95 |
| S4_OCC |  | Section 4 - Hall 4, Admin/NOC, External Works & Landscaping: sectional occupancy inspection (kayttoonottotarkastus) & Tenant technical acceptance - 5-day statutory notice overlaps L5 tail |  | 5d | 2027-09-08 | 2027-09-14 | S4_L5 SS+2d, S3_OCC FS+4d | 17d | 0d | Site Management [90 h] | 97,410.47 |
| S4_TOC |  | M: Section 4 - Hall 4, Admin/NOC, External Works & Landscaping - TAKING OVER (contractual Time for Completion) | milestone | 0d | 2027-09-14 | 2027-09-14 | S4_OCC | 17d | 0d |  |  |

| ID | WBS | Activity | Type | Duration | Start | Finish | Predecessors | Total float |
| --- | --- | --- | --- | --- | --- | --- | --- | --- |
|  | 09-CLOSE | **Post-Completion: DNP, PUE Demonstration & Performance Certificate** |  |  | 2028-05-01 | 2030-01-01 |  |  |
| S1_PUE12 |  | M: Section 1 - 12-month metered PUE demonstration complete (Tests after Completion) | milestone | 0d | 2028-05-01 | 2028-05-01 | S1_TOC | 0d |
| S2_PUE12 |  | M: Section 2 - 12-month metered PUE demonstration complete (Tests after Completion) | milestone | 0d | 2028-07-03 | 2028-07-03 | S2_TOC | 0d |
| S3_PUE12 |  | M: Section 3 - 12-month metered PUE demonstration complete (Tests after Completion) | milestone | 0d | 2028-10-02 | 2028-10-02 | S3_TOC | 0d |
| S4_PUE12 |  | M: Section 4 - 12-month metered PUE demonstration complete (Tests after Completion) | milestone | 0d | 2029-01-01 | 2029-01-01 | S4_TOC | 0d |
| S1_DNP_END |  | M: Section 1 - Defects Notification Period ends (24 months from Taking-Over, Rev C Cl.11.1) | milestone | 0d | 2029-05-01 | 2029-05-01 | S1_TOC | 0d |
| S2_DNP_END |  | M: Section 2 - Defects Notification Period ends (24 months from Taking-Over, Rev C Cl.11.1) | milestone | 0d | 2029-07-02 | 2029-07-02 | S2_TOC | 0d |
| S3_DNP_END |  | M: Section 3 - Defects Notification Period ends (24 months from Taking-Over, Rev C Cl.11.1) | milestone | 0d | 2029-10-01 | 2029-10-01 | S3_TOC | 0d |
| MS_PC |  | M: Performance Certificate (whole of the Works) - end of Section 4 DNP | milestone | 0d | 2030-01-01 | 2030-01-01 | S4_DNP_END | 0d |
| S4_DNP_END |  | M: Section 4 - Defects Notification Period ends (24 months from Taking-Over, Rev C Cl.11.1) | milestone | 0d | 2030-01-01 | 2030-01-01 | S4_TOC | 0d |
