# Polaris DC-1 — Aviapolis Data Campus Phase 1, Vantaa

Schedule from Primavera P6, 2026-03-02 to 2027-06-02, costs in EUR.
Must finish by 2027-06-02

## Resources

| Resource | Group | Rate |
| --- | --- | --- |
| Project Management | labor | 1023.14 |
| Compliance | labor | 186.25 |
| Procurement | labor | 1059.87 |
| Vendor (Steel Fabricator) | labor | 364.6 |
| Design Management | labor | 313.55 |
| Site Engineering | labor | 142.38 |
| Environmental | labor | 162.66 |
| Site Management | labor | 392.37 |
| Civil | labor | 208.6 |
| Blasting | labor | 166.12 |
| General Works | labor | 326.15 |
| Security | labor | 253.2 |
| Electrical | labor | 333.26 |
| Earthworks | labor | 159.84 |
| Civils/Comms | labor | 269.23 |
| Civils | labor | 238.61 |
| Building | labor | 297.37 |
| Civil/Structural Design | labor | 212.33 |
| Civil Design | labor | 379.46 |
| Structural Design | labor | 413.89 |
| Electrical Design | labor | 372.27 |
| MEP Design | labor | 361.61 |
| Piling | labor | 209.81 |
| Concrete | labor | 177.35 |
| DNO/Electrical | labor | 254.74 |
| Groundworks | labor | 173.92 |
| Mechanical | labor | 454.55 |
| Structural Steel | labor | 270.42 |
| Fit-Out | labor | 121.33 |
| Roofing | labor | 435.81 |
| Envelope | labor | 379.7 |
| Controls | labor | 648.45 |
| Landscaping | labor | 306.87 |
| Commissioning | labor | 146.71 |
| Documents | labor | 123.31 |

## Schedule

| ID | Activity | Type | Duration | Start | Finish | Predecessors | Total float | Resources | Cost |
| --- | --- | --- | --- | --- | --- | --- | --- | --- | --- |
| 1 | M — Contract Commencement Date | milestone | 0d | 2026-03-02 | 2026-03-02 |  | 0d |  |  |
| 10 | Blasting permit (louhintailmoitus), blast design approval & neighbour notice |  | 20d | 2026-03-02 | 2026-03-27 | 1 | 30d | Compliance [480 h] | 95,361 |
| 12 | Building permit conditions discharged; aloitusilmoitus filed |  | 10d | 2026-03-02 | 2026-03-13 | 1 | 18d | Compliance [160 h] | 47,681 |
| 2 | M — Advance procurement instruction issued (110/20 kV transformers) | milestone | 0d | 2026-03-02 | 2026-03-02 | 1 | 11d |  |  |
| 21 | LT-01: 110/20 kV transformers (2 nr, 16 MVA) — outstanding manufacture, FAT & delivery |  | 205d | 2026-03-02 | 2026-12-11 | 2 | 11d | Procurement [3280 h] | 5,446,362 |
| 3 | Project mobilisation, design management & site set-up |  | 10d | 2026-03-02 | 2026-03-13 | 1 | 0d | Project Management [400 h] | 409,257 |
| 36 | Advance procurement — long-lead package release on Employer's Basis of Design |  | 5d | 2026-03-02 | 2026-03-06 | 2 | 25d | Procurement [120 h] | 127,184.4 |
| 37 | Subcontract package tendering & award — civils, structure, envelope |  | 35d | 2026-03-02 | 2026-04-17 | 1 | 55d | Procurement [840 h] | 890,290.8 |
| 9 | Statutory supervisors (vastaava tyonjohtaja) appointed & approved |  | 15d | 2026-03-02 | 2026-03-20 | 1 | 13d | Compliance [240 h] | 46,886 |
| 22 | LT-02: 20 kV switchgear & protection — manufacture, FAT & delivery |  | 169d | 2026-03-09 | 2026-10-29 | 36 | 41d | Procurement [2704 h] | 2,865,888.48 |
| 23 | LT-03: standby generators (8 nr, 2.5 MVA) — manufacture, FAT & delivery |  | 179d | 2026-03-09 | 2026-11-12 | 36 | 25d | Procurement [2864 h] | 3,708,002 |
| 24 | LT-04: UPS modules (16 nr, 1000 kVA) — manufacture, FAT & delivery |  | 146d | 2026-03-09 | 2026-09-28 | 36 | 49d | Procurement [2336 h] | 2,672,321 |
| 25 | LT-05: battery systems (Li-ion) — manufacture, FAT & delivery |  | 116d | 2026-03-09 | 2026-08-17 | 36 | 79d | Procurement [1856 h] | 1,967,118.72 |
| 26 | LT-06: overhead busway — manufacture & delivery |  | 96d | 2026-03-09 | 2026-07-20 | 36 | 104d | Procurement [1536 h] | 1,627,960.32 |
| 27 | LT-07: chillers (4 nr) — manufacture, FAT & delivery |  | 126d | 2026-03-09 | 2026-08-31 | 36 | 95d | Procurement [2016 h] | 2,136,697.92 |
| 28 | LT-08: dry coolers / adiabatic units (10 nr) — manufacture & delivery |  | 106d | 2026-03-09 | 2026-08-03 | 36 | 116d | Procurement [1696 h] | 1,797,539.52 |
| 29 | LT-09: CRAH units (28 nr) — manufacture, FAT & delivery |  | 106d | 2026-03-09 | 2026-08-03 | 36 | 75d | Procurement [1696 h] | 2,504,130 |
| 30 | LT-10: waste-heat recovery plant (4 MW) — manufacture, FAT & delivery |  | 144d | 2026-03-09 | 2026-09-24 | 36 | 74d | Procurement [2304 h] | 2,441,940.48 |
| 31 | LT-11: structural steel — design-assist fabrication, TPI & delivery |  | 68d | 2026-03-09 | 2026-06-10 | 36 | 65d | Vendor (Steel Fabricator) [5440 h] | 1,983,424 |
| 32 | LT-12: precast concrete wall panels (256 nr) — manufacture & delivery |  | 64d | 2026-03-09 | 2026-06-04 | 36 | 134d | Procurement [1024 h] | 1,808,060 |
| 33 | LT-13: acoustic louvres & cooling intake hoods — manufacture & delivery |  | 76d | 2026-03-09 | 2026-06-22 | 36 | 116d | Procurement [1216 h] | 1,288,801.92 |
| 34 | LT-14: BMS/DCIM hardware, licences & configuration |  | 74d | 2026-03-09 | 2026-06-18 | 36 | 148d | Procurement [1184 h] | 1,254,886.08 |
| 35 | LT-15: suppression system (data halls) — manufacture & delivery |  | 96d | 2026-03-09 | 2026-07-20 | 36 | 102d | Procurement [1536 h] | 1,627,960.32 |
| 20 | Protected species & vegetation clearance survey |  | 8d | 2026-03-16 | 2026-03-25 | 12 | 30d | Environmental [128 h] | 20,821 |
| 4 | Design basis, Employer's Requirements review & Employer comment period |  | 15d | 2026-03-16 | 2026-04-03 | 3 | 0d | Design Management [600 h] | 208,602 |
| 7 | Site setting-out, boundary survey & geotechnical verification |  | 10d | 2026-03-16 | 2026-03-27 | 3 | 40d | Site Engineering [240 h] | 34,171.2 |
| 38 | Site establishment — compound, access, hoarding & welfare |  | 20d | 2026-03-23 | 2026-04-17 | 9, 12 | 13d | Site Management [1280 h] | 502,235 |
| 11 | Pre-blast condition surveys — residences & logistics facility |  | 10d | 2026-03-30 | 2026-04-10 | 10 | 30d | Civil [240 h] | 50,065 |
| 44 | Blast vibration monitoring & compliance reporting |  | 30d | 2026-03-30 | 2026-05-08 | 10 | 36d | Blasting [480 h] | 79,737.6 |
| 5 | Stage 1 concept design — campus, building & systems |  | 30d | 2026-04-06 | 2026-05-15 | 4 | 0d | Design Management [1920 h] | 737,459 |
| 39 | Temporary works — crane bases, hardstanding & site roads |  | 15d | 2026-04-20 | 2026-05-08 | 38 | 191d | General Works [960 h] | 313,104 |
| 40 | Site security, gates & temporary CCTV |  | 10d | 2026-04-20 | 2026-05-01 | 38 | 258d | Security [320 h] | 117,612 |
| 41 | Temporary power, water & site services |  | 12d | 2026-04-20 | 2026-05-05 | 38 | 194d | Electrical [384 h] | 141,929 |
| 42 | Vegetation clearance, topsoil strip & stockpiling — whole site |  | 12d | 2026-04-20 | 2026-05-05 | 38, 20 | 13d | Earthworks [1536 h] | 245,514.24 |
| 43 | Archaeological watching brief & heritage monitoring |  | 15d | 2026-05-06 | 2026-05-26 | 42 | 13d | Earthworks [480 h] | 76,723.2 |
| 45 | Rock blasting — eastern third (Hall 4 & primary substation), permit hours 08:00–18:00 |  | 26d | 2026-05-06 | 2026-06-10 | 7, 11, 42 | 13d | Blasting [3328 h] | 569,018 |
| 47 | Front 1 (Halls 1–3, NOC, generator compound) — bulk excavation & grading to formation |  | 18d | 2026-05-06 | 2026-05-29 | 42, 43 SS | 13d | Earthworks [2880 h] | 466,372 |
| 48 | Made-ground removal & engineered fill replacement — NW corner |  | 8d | 2026-05-06 | 2026-05-15 | 42 | 184d | Earthworks [512 h] | 103,085 |
| 129 | Fibre route — dual entry ducting, chambers & carrier approvals |  | 20d | 2026-05-11 | 2026-06-05 | 39 | 191d | Civils/Comms [960 h] | 258,462 |
| 141 | Site perimeter fencing, gates & vehicle barriers (1,070 m) |  | 15d | 2026-05-11 | 2026-05-29 | 39 | 237d | Civils [720 h] | 257,611 |
| 6 | Stage 1 concept design submission & Engineer review (14 days) |  | 15d | 2026-05-18 | 2026-06-05 | 5 | 0d | Design Management [360 h] | 112,878 |
| 142 | Gatehouse & site security building |  | 20d | 2026-06-01 | 2026-06-26 | 141 | 237d | Building [1280 h] | 380,633.6 |
| 49 | Dewatering & groundwater control |  | 12d | 2026-06-01 | 2026-06-16 | 47 | 13d | Earthworks [384 h] | 81,707 |
| 51 | Earthworks validation testing (plate bearing & Proctor) |  | 6d | 2026-06-01 | 2026-06-08 | 47 | 19d | Earthworks [144 h] | 32,653 |
| 13 | Stage 2 detailed design — civil, earthworks & external works |  | 25d | 2026-06-08 | 2026-07-10 | 6 | 69d | Civil Design [1000 h] | 379,460 |
| 14 | Stage 2 detailed design — structural & precast |  | 30d | 2026-06-08 | 2026-07-17 | 6 | 13d | Structural Design [1200 h] | 496,672 |
| 15 | Stage 2 detailed design — electrical 110/20 kV, LV & protection study |  | 35d | 2026-06-08 | 2026-07-24 | 6 | 58d | Electrical Design [1680 h] | 625,413.6 |
| 16 | Stage 2 detailed design — mechanical, cooling & waste-heat recovery |  | 35d | 2026-06-08 | 2026-07-24 | 6 | 59d | MEP Design [1680 h] | 607,504.8 |
| 17 | Stage 2 detailed design — fire engineering, suppression & ELV/BMS/DCIM |  | 25d | 2026-06-08 | 2026-07-10 | 6 | 69d | MEP Design [1000 h] | 367,538 |
| 8 | Geotechnical interpretation, blasting design & foundation design |  | 20d | 2026-06-08 | 2026-07-03 | 6 | 0d | Civil/Structural Design [640 h] | 135,891.2 |
| 46 | Rock breaking, mucking out & rock-face scaling — eastern third |  | 12d | 2026-06-11 | 2026-06-26 | 44, 45 | 13d | Earthworks [1536 h] | 245,514.24 |
| 50 | Front 2 (Hall 4 & primary substation) — bulk excavation & grading to formation |  | 12d | 2026-06-29 | 2026-07-14 | 46 | 37d | Earthworks [1536 h] | 245,514.24 |
| 53 | Piled foundations — rock-socketed piles, eastern third (Hall 4 & substation) |  | 30d | 2026-06-29 | 2026-08-07 | 46 | 13d | Piling [2880 h] | 604,252.8 |
| 52 | Front 1 — pad footings, ground beams & strip foundations |  | 20d | 2026-07-06 | 2026-07-31 | 8, 37, 49, 51 | 0d | Concrete [3840 h] | 699,924 |
| 19 | Crane & mast aviation clearance (Fintraffic / Finavia) |  | 25d | 2026-07-20 | 2026-08-21 | 14 | 13d | Compliance [400 h] | 74,500 |
| 18 | Stage 2 detailed design submission & Engineer review (21 days) |  | 25d | 2026-07-27 | 2026-08-28 | 13, 14, 15, 16, 17 | 59d | Design Management [800 h] | 250,840 |
| 84 | DNO 110 kV outage application, 16-week notice period & confirmation (spring/autumn window only) |  | 80d | 2026-07-27 | 2026-11-13 | 15 | 58d | DNO/Electrical [1920 h] | 489,100.8 |
| 120 | Fire pump house, water storage tanks & water-mist infrastructure |  | 18d | 2026-08-03 | 2026-08-26 | 52 | 113d | Mechanical [1152 h] | 523,641.6 |
| 56 | Below-slab services, ducts, earthing & under-slab drainage |  | 14d | 2026-08-03 | 2026-08-20 | 52 | 0d | Groundworks [2240 h] | 392,426 |
| 60 | NOC & administration block — foundations & ground slab |  | 16d | 2026-08-03 | 2026-08-24 | 48, 52 | 129d | Concrete [2560 h] | 454,016 |
| 79 | Generator compound — foundations, bunds & acoustic enclosure bases |  | 12d | 2026-08-03 | 2026-08-18 | 52 | 87d | Concrete [768 h] | 224,913 |
| 54 | Pile integrity & static load testing (authority witnessed) |  | 6d | 2026-08-10 | 2026-08-17 | 53 | 13d | Piling [144 h] | 54,617 |
| 55 | Front 2 — foundations to Hall 4 & primary substation |  | 16d | 2026-08-18 | 2026-09-08 | 50, 54 | 13d | Concrete [3072 h] | 544,819.2 |
| 110 | Earthing, bonding & lightning protection — whole site |  | 16d | 2026-08-21 | 2026-09-11 | 56 | 113d | Electrical [1024 h] | 480,768 |
| 57 | Halls 1 & 2 — reinforced concrete slab-on-grade (3,460 m²) |  | 14d | 2026-08-21 | 2026-09-09 | 56 | 0d | Concrete [2688 h] | 487,018 |
| 58 | Hall 3 — reinforced concrete slab-on-grade (1,730 m²) |  | 10d | 2026-08-21 | 2026-09-03 | 56 | 10d | Concrete [1600 h] | 283,760 |
| 61 | External pits, thrust blocks & HV cable trenches to primary substation |  | 14d | 2026-08-21 | 2026-09-09 | 56 | 61d | Groundworks [1792 h] | 311,664.64 |
| 76 | NOC & administration block — structure & envelope |  | 26d | 2026-08-25 | 2026-09-29 | 60 | 129d | Building [4160 h] | 1,250,407 |
| 59 | Hall 4 & primary substation — reinforced concrete slab-on-grade (1,730 m²) |  | 10d | 2026-09-09 | 2026-09-22 | 55 | 13d | Concrete [1600 h] | 283,760 |
| 138 | Surface water drainage, attenuation & oil separators |  | 20d | 2026-09-10 | 2026-10-07 | 61 | 117d | Civils [2560 h] | 610,841.6 |

Notes:
- 10: Expenses: Blasting permit (louhintailmoitus), blast design approval & neighbour notice — Materials/Plant/Sublet 5961
- 12: Expenses: Building permit conditions discharged; aloitusilmoitus filed — Materials/Plant/Sublet 17881
- 21: Expenses: LT-01: 110/20 kV transformers (2 nr, 16 MVA) — outstanding manufacture, FAT & delivery — Materials/Plant/Sublet 1969988
- 3: Expenses: Project mobilisation, design management & site set-up — Materials/Plant/Sublet 1
- 9: Expenses: Statutory supervisors (vastaava tyonjohtaja) appointed & approved — Materials/Plant/Sublet 2186
- 23: Expenses: LT-03: standby generators (8 nr, 2.5 MVA) — manufacture, FAT & delivery — Materials/Plant/Sublet 672534
- 24: Expenses: LT-04: UPS modules (16 nr, 1000 kVA) — manufacture, FAT & delivery — Materials/Plant/Sublet 196465
- 29: Expenses: LT-09: CRAH units (28 nr) — manufacture, FAT & delivery — Materials/Plant/Sublet 706590
- 32: Expenses: LT-12: precast concrete wall panels (256 nr) — manufacture & delivery — Materials/Plant/Sublet 722753
- 20: Expenses: Protected species & vegetation clearance survey — Materials/Plant/Sublet 0.52
- 4: Expenses: Design basis, Employer's Requirements review & Employer comment period — Materials/Plant/Sublet 20472
- 38: Expenses: Site establishment — compound, access, hoarding & welfare — Materials/Plant/Sublet 1.4
- 11: Expenses: Pre-blast condition surveys — residences & logistics facility — Materials/Plant/Sublet 1
- 5: Expenses: Stage 1 concept design — campus, building & systems — Materials/Plant/Sublet 135443
- 40: Expenses: Site security, gates & temporary CCTV — Materials/Plant/Sublet 36588
- 41: Expenses: Temporary power, water & site services — Materials/Plant/Sublet 13957.2
- 45: Expenses: Rock blasting — eastern third (Hall 4 & primary substation), permit hours 08:00–18:00 — Materials/Plant/Sublet 16170.6
- 47: Expenses: Front 1 (Halls 1–3, NOC, generator compound) — bulk excavation & grading to formation — Materials/Plant/Sublet 6032.8
- 48: Expenses: Made-ground removal & engineered fill replacement — NW corner — Materials/Plant/Sublet 21246.9
- 129: Expenses: Fibre route — dual entry ducting, chambers & carrier approvals — Materials/Plant/Sublet 1.2
- 141: Expenses: Site perimeter fencing, gates & vehicle barriers (1,070 m) — Materials/Plant/Sublet 85811.8
- 49: Expenses: Dewatering & groundwater control — Materials/Plant/Sublet 20328.4
- 51: Expenses: Earthworks validation testing (plate bearing & Proctor) — Materials/Plant/Sublet 9636.04
- 14: Expenses: Stage 2 detailed design — structural & precast — Materials/Plant/Sublet 4
- 17: Expenses: Stage 2 detailed design — fire engineering, suppression & ELV/BMS/DCIM — Materials/Plant/Sublet 5928
- 52: Expenses: Front 1 — pad footings, ground beams & strip foundations — Materials/Plant/Sublet 18900
- 56: Expenses: Below-slab services, ducts, earthing & under-slab drainage — Materials/Plant/Sublet 2845.2
- 79: Expenses: Generator compound — foundations, bunds & acoustic enclosure bases — Materials/Plant/Sublet 88708.2
- 54: Expenses: Pile integrity & static load testing (authority witnessed) — Materials/Plant/Sublet 24404.4
- 110: Expenses: Earthing, bonding & lightning protection — whole site — Materials/Plant/Sublet 139510
- 57: Expenses: Halls 1 & 2 — reinforced concrete slab-on-grade (3,460 m²) — Materials/Plant/Sublet 10301.2
- 76: Expenses: NOC & administration block — structure & envelope — Materials/Plant/Sublet 13347.8

| ID | Activity | Type | Duration | Start | Finish | Predecessors | Total float | Resources | Cost |
| --- | --- | --- | --- | --- | --- | --- | --- | --- | --- |
| 139 | Foul drainage & connection to public sewer |  | 14d | 2026-09-10 | 2026-09-29 | 61 | 123d | Civils [672 h] | 228,534 |
| 62 | Slab power-float finishing, curing & saw-cut joints — Halls 1 & 2 |  | 8d | 2026-09-10 | 2026-09-21 | 57 | 46d | Concrete [384 h] | 130,760 |
| 63 | Halls 1 & 2 — structural steel erection (primary & secondary) |  | 16d | 2026-09-10 | 2026-10-01 | 19, 31, 57 | 0d | Structural Steel [2560 h] | 705,450 |
| 90 | Cooling spine — primary chilled-water pipework, pumps & headers |  | 24d | 2026-09-10 | 2026-10-13 | 61 | 61d | Mechanical [4608 h] | 2,094,566.4 |
| 64 | Hall 3 — structural steel erection (trade-follow) |  | 10d | 2026-09-18 | 2026-10-01 | 58, 63 SS+6d | 0d | Structural Steel [1600 h] | 455,129 |
| 65 | Hall 4 & primary substation — structural steel erection |  | 14d | 2026-09-23 | 2026-10-12 | 59, 31 | 13d | Structural Steel [2240 h] | 605,740.8 |
| 106 | NOC & administration — HVAC & services rough-in |  | 18d | 2026-09-30 | 2026-10-23 | 76 | 129d | Mechanical [1152 h] | 572,825 |
| 127 | Access control, intruder detection & CCTV |  | 16d | 2026-09-30 | 2026-10-21 | 40, 76 | 151d | Security [1536 h] | 388,915.2 |
| 136 | Sanitary, welfare & staff facilities — fit-out |  | 16d | 2026-09-30 | 2026-10-21 | 76 | 144d | Fit-Out [1024 h] | 176,581 |
| 66 | Roof deck & metal sheeting — Halls 1–3 |  | 20d | 2026-10-02 | 2026-10-29 | 63, 64 | 0d | Roofing [3200 h] | 1,394,592 |
| 68 | Halls 1 & 2 — precast concrete wall panels (2-hr fire rated) |  | 16d | 2026-10-02 | 2026-10-23 | 63, 32 | 49d | Envelope [2560 h] | 972,032 |
| 140 | Roads, hardstanding, kerbs & car parking (9,800 m²) |  | 28d | 2026-10-08 | 2026-11-16 | 138, 139 | 117d | Civils [4480 h] | 1,068,972.8 |
| 69 | Hall 3 — precast concrete wall panels (trade-follow) |  | 14d | 2026-10-12 | 2026-10-29 | 68 SS+6d | 76d | Envelope [2240 h] | 850,528 |
| 67 | Roof deck & metal sheeting — Hall 4 & primary substation |  | 13d | 2026-10-13 | 2026-10-29 | 65 | 13d | Roofing [1664 h] | 725,187.84 |
| 70 | Hall 4 — precast concrete wall panels |  | 12d | 2026-10-13 | 2026-10-28 | 65, 32 | 89d | Envelope [1536 h] | 583,219.2 |
| 125 | BMS — campus controllers, field devices & integration |  | 20d | 2026-10-14 | 2026-11-10 | 34, 90 | 65d | Controls [1280 h] | 830,016 |
| 91 | Chillers (4 nr) — offloading, setting & pipework connection |  | 15d | 2026-10-14 | 2026-11-03 | 27, 90 | 64d | Mechanical [1920 h] | 1,155,031 |
| 93 | Waste-heat recovery plant (4 MW) — installation & hydraulic integration |  | 18d | 2026-10-14 | 2026-11-06 | 30, 90 | 61d | Mechanical [2880 h] | 1,309,104 |
| 94 | District heating boundary chamber, metering skid & network connection |  | 16d | 2026-10-14 | 2026-11-04 | 90 | 126d | Mechanical [1024 h] | 600,381 |
| 135 | NOC & administration — internal fit-out & finishes |  | 20d | 2026-10-26 | 2026-11-20 | 106 | 129d | Fit-Out [3200 h] | 388,256 |
| 75 | External doors, dock levellers, roller shutters & fire doors |  | 12d | 2026-10-26 | 2026-11-10 | 68 | 108d | Envelope [1152 h] | 720,080 |
| 71 | Roof waterproofing & rainwater goods — Halls 1–3 |  | 12d | 2026-10-30 | 2026-11-16 | 66 | 0d | Roofing [1536 h] | 709,128 |
| 72 | Roof waterproofing — Hall 4 & primary substation |  | 10d | 2026-10-30 | 2026-11-12 | 67 | 75d | Roofing [480 h] | 302,885 |
| 74 | Primary substation building — cladding, roofing & weatherproofing |  | 14d | 2026-10-30 | 2026-11-18 | 67 | 13d | Envelope [896 h] | 467,847 |
| 144 | Utility connections — water, telecoms & district heating tie-in |  | 18d | 2026-11-05 | 2026-11-30 | 94 | 126d | Civils [864 h] | 285,328 |
| 137 | Internal & external signage, protection & decoration |  | 12d | 2026-11-11 | 2026-11-26 | 75 | 108d | Fit-Out [576 h] | 96,170 |
| 103 | Hall 4 — ventilation, pressurisation & smoke extract ductwork |  | 12d | 2026-11-13 | 2026-11-30 | 72 | 83d | Mechanical [1536 h] | 698,188.8 |
| 109 | Hall 4 — containment, LV distribution & small power |  | 16d | 2026-11-13 | 2026-12-04 | 72 | 75d | Electrical [2560 h] | 853,145.6 |
| 123 | Hall 4 — fire detection & suppression |  | 12d | 2026-11-13 | 2026-11-30 | 72 | 83d | Electrical [1152 h] | 383,915.52 |
| 87 | Standby generators (8 nr, 2.5 MVA) — installation, fuel system & exhaust |  | 20d | 2026-11-13 | 2026-12-10 | 23, 79 | 25d | Electrical [2560 h] | 1,527,115 |
| 97 | Hall 4 — CRAH units (7 nr) — setting, pipework & drains |  | 10d | 2026-11-13 | 2026-11-26 | 70, 72 | 78d | Mechanical [1280 h] | 735,819 |
| 101 | Halls 1 & 2 — ventilation, pressurisation & smoke extract ductwork |  | 18d | 2026-11-17 | 2026-12-10 | 18, 71 | 3d | Mechanical [2304 h] | 1,047,283.2 |
| 107 | Halls 1 & 2 — containment, LV distribution & small power |  | 20d | 2026-11-17 | 2026-12-14 | 62, 71 | 6d | Electrical [3840 h] | 1,279,718.4 |
| 121 | Halls 1 & 2 — fire detection & aspirating (VESDA) system |  | 14d | 2026-11-17 | 2026-12-04 | 71 | 3d | Electrical [1792 h] | 597,201.92 |
| 143 | External lighting & site power distribution |  | 14d | 2026-11-17 | 2026-12-04 | 140 | 119d | Electrical [672 h] | 223,950.72 |
| 145 | Landscaping, tree replacement (1:3) & boundary noise bund |  | 16d | 2026-11-17 | 2026-12-08 | 140 | 117d | Landscaping [768 h] | 235,676.16 |
| 73 | Acoustic louvres, cooling intakes & exhaust hoods |  | 14d | 2026-11-17 | 2026-12-04 | 71, 33 | 11d | Envelope [1792 h] | 680,422.4 |
| 95 | Halls 1 & 2 — CRAH units (14 nr) — setting, pipework & drains |  | 14d | 2026-11-17 | 2026-12-04 | 29, 71 | 0d | Mechanical [2240 h] | 1,430,596 |
| 96 | Hall 3 — CRAH units (7 nr) — setting, pipework & drains |  | 10d | 2026-11-17 | 2026-11-30 | 69, 71 | 64d | Mechanical [1280 h] | 735,819 |
| 80 | Primary substation — HV switchroom fit-out, earthing & C&I containment |  | 14d | 2026-11-19 | 2026-12-08 | 74 | 13d | Electrical [896 h] | 375,145 |
| 100 | Hall 4 — chilled-water distribution & insulation |  | 12d | 2026-11-20 | 2026-12-07 | 97 SS+5d | 78d | Mechanical [1536 h] | 698,188.8 |
| 98 | Halls 1 & 2 — chilled-water distribution, valves & insulation |  | 16d | 2026-11-24 | 2026-12-15 | 95 SS+5d | 0d | Mechanical [2560 h] | 1,163,648 |
| 99 | Hall 3 — chilled-water distribution & insulation |  | 12d | 2026-11-24 | 2026-12-09 | 96 SS+5d | 64d | Mechanical [1536 h] | 698,188.8 |
| 108 | Hall 3 — containment, LV distribution & small power (trade-follow) |  | 16d | 2026-11-25 | 2026-12-16 | 107 SS+6d | 47d | Electrical [2560 h] | 853,145.6 |
| 114 | Hall 4 — UPS modules & battery systems installation |  | 12d | 2026-11-25 | 2026-12-10 | 109 SS+8d, 24 | 75d | Electrical [1536 h] | 721,152 |
| 112 | Halls 1 & 2 — UPS modules & battery systems installation (16 nr, 1000 kVA) |  | 15d | 2026-11-27 | 2026-12-17 | 24, 25, 107 SS+8d | 6d | Electrical [2400 h] | 1,430,857 |
| 102 | Hall 3 — ventilation, pressurisation & smoke extract ductwork (trade-follow) |  | 12d | 2026-12-01 | 2026-12-16 | 101 SS+10d | 59d | Mechanical [1536 h] | 698,188.8 |
| 122 | Hall 3 — fire detection & suppression (trade-follow) |  | 12d | 2026-12-01 | 2026-12-16 | 121 SS+10d | 59d | Electrical [1152 h] | 383,915.52 |
| 173 | District heating waste-heat recovery — 72-hour witnessed test (heating season Oct–Apr) |  | 5d | 2026-12-01 | 2026-12-07 | 93, 144 | 126d | Commissioning [160 h] | 39,863 |
| 118 | Halls 3 & 4 — lighting, emergency lighting & power to mechanical plant |  | 16d | 2026-12-03 | 2026-12-24 | 108 SS+6d | 53d | Electrical [2048 h] | 682,516.48 |
| 115 | Halls 1 & 2 — overhead busway to rack positions |  | 14d | 2026-12-04 | 2026-12-23 | 26, 112 SS+5d | 6d | Electrical [2240 h] | 746,502.4 |
| 113 | Hall 3 — UPS modules & battery systems installation |  | 12d | 2026-12-07 | 2026-12-22 | 108 SS+8d, 24 | 47d | Electrical [1536 h] | 721,152 |
| 124 | Inert gas suppression systems — all four data halls |  | 16d | 2026-12-07 | 2026-12-28 | 35, 121 | 3d | Electrical [2048 h] | 850,237 |
| 77 | Roof penetrations, flashings & edge details — all zones |  | 8d | 2026-12-07 | 2026-12-16 | 73 | 11d | Roofing [256 h] | 120,470 |
| 92 | Dry coolers / adiabatic units (10 nr) — installation & connection |  | 14d | 2026-12-07 | 2026-12-24 | 28, 73 | 27d | Mechanical [1792 h] | 933,405 |
| 104 | Primary substation & switchrooms — mechanical cooling & ventilation |  | 12d | 2026-12-09 | 2026-12-24 | 80 | 27d | Mechanical [576 h] | 352,372 |
| 111 | 20/0.4 kV hall substations & LV switchboards (4 nr) |  | 18d | 2026-12-09 | 2027-01-01 | 80 | 42d | Electrical [2880 h] | 1,134,280 |
| 134 | Substation & electrical rooms — finishes, signage & access |  | 12d | 2026-12-09 | 2026-12-24 | 80 | 27d | Fit-Out [576 h] | 101,221 |
| 146 | External works completion & as-built survey |  | 8d | 2026-12-09 | 2026-12-18 | 143, 145 | 117d | Civils [256 h] | 74,308 |
| 82 | 20 kV switchgear & protection panels — installation & hall HV cabling |  | 16d | 2026-12-09 | 2026-12-30 | 22, 80 | 13d | Electrical [1024 h] | 740,924 |
| 88 | Generator control, synchronising & paralleling gear |  | 12d | 2026-12-11 | 2026-12-28 | 87 | 25d | Electrical [576 h] | 442,785 |
| 81 | 110/20 kV transformers — offloading, installation, oil filling & connection |  | 15d | 2026-12-14 | 2027-01-01 | 21, 80 | 11d | Electrical [960 h] | 915,749 |
| 116 | Halls 3 & 4 — overhead busway to rack positions |  | 14d | 2026-12-15 | 2027-01-01 | 26, 113 SS+6d | 47d | Electrical [2240 h] | 746,502.4 |
| 117 | Halls 1 & 2 — lighting, emergency lighting & power to mechanical plant |  | 18d | 2026-12-15 | 2027-01-07 | 107 | 23d | Electrical [2880 h] | 959,788.8 |
| 128 | Structured cabling, meet-me room & carrier entry |  | 16d | 2026-12-15 | 2027-01-05 | 107, 129 | 55d | Electrical [1024 h] | 341,258.24 |
| 105 | HVAC terminal units, diffusers & grilles — Halls 1 & 2 |  | 12d | 2026-12-16 | 2026-12-31 | 98, 101 | 0d | Mechanical [576 h] | 542,923 |
| 78 | M — Weathertight achieved, Halls 1 & 2 | milestone | 0d | 2026-12-17 | 2026-12-17 | 68, 77 | 11d |  |  |
| 147 | Shared infrastructure — pre-commissioning, flushing & static checks |  | 12d | 2026-12-29 | 2027-01-13 | 41, 88, 91, 92, 93, 104, 120, 134 | 25d | Commissioning [576 h] | 92,771 |
| 89 | Standby generator acoustic & emissions compliance test (45 dB(A) NE boundary) |  | 5d | 2026-12-29 | 2027-01-04 | 88, 73 | 66d | Commissioning [120 h] | 55,283 |
| 130 | Hall 1 — white space fit-out, raised floor & finishes |  | 16d | 2027-01-01 | 2027-01-22 | 78, 105, 115, 124 | 0d | Fit-Out [3072 h] | 418,622 |

Notes:
- 139: Expenses: Foul drainage & connection to public sewer — Materials/Plant/Sublet 68188.1
- 62: Expenses: Slab power-float finishing, curing & saw-cut joints — Halls 1 & 2 — Materials/Plant/Sublet 62657.6
- 63: Expenses: Halls 1 & 2 — structural steel erection (primary & secondary) — Materials/Plant/Sublet 13174.8
- 64: Expenses: Hall 3 — structural steel erection (trade-follow) — Materials/Plant/Sublet 22457
- 106: Expenses: NOC & administration — HVAC & services rough-in — Materials/Plant/Sublet 49183.4
- 136: Expenses: Sanitary, welfare & staff facilities — fit-out — Materials/Plant/Sublet 52339.1
- 91: Expenses: Chillers (4 nr) — offloading, setting & pipework connection — Materials/Plant/Sublet 282295
- 94: Expenses: District heating boundary chamber, metering skid & network connection — Materials/Plant/Sublet 134922
- 75: Expenses: External doors, dock levellers, roller shutters & fire doors — Materials/Plant/Sublet 282666
- 71: Expenses: Roof waterproofing & rainwater goods — Halls 1–3 — Materials/Plant/Sublet 39723.8
- 72: Expenses: Roof waterproofing — Hall 4 & primary substation — Materials/Plant/Sublet 93696.2
- 74: Expenses: Primary substation building — cladding, roofing & weatherproofing — Materials/Plant/Sublet 127636
- 144: Expenses: Utility connections — water, telecoms & district heating tie-in — Materials/Plant/Sublet 79169
- 137: Expenses: Internal & external signage, protection & decoration — Materials/Plant/Sublet 26283.9
- 87: Expenses: Standby generators (8 nr, 2.5 MVA) — installation, fuel system & exhaust — Materials/Plant/Sublet 673969
- 97: Expenses: Hall 4 — CRAH units (7 nr) — setting, pipework & drains — Materials/Plant/Sublet 153995
- 95: Expenses: Halls 1 & 2 — CRAH units (14 nr) — setting, pipework & drains — Materials/Plant/Sublet 412404
- 96: Expenses: Hall 3 — CRAH units (7 nr) — setting, pipework & drains — Materials/Plant/Sublet 153995
- 80: Expenses: Primary substation — HV switchroom fit-out, earthing & C&I containment — Materials/Plant/Sublet 76544
- 114: Expenses: Hall 4 — UPS modules & battery systems installation — Materials/Plant/Sublet 209265
- 112: Expenses: Halls 1 & 2 — UPS modules & battery systems installation (16 nr, 1000 kVA) — Materials/Plant/Sublet 631033
- 173: Expenses: District heating waste-heat recovery — 72-hour witnessed test (heating season Oct–Apr) — Materials/Plant/Sublet 16389.4
- 113: Expenses: Hall 3 — UPS modules & battery systems installation — Materials/Plant/Sublet 209265
- 124: Expenses: Inert gas suppression systems — all four data halls — Materials/Plant/Sublet 167721
- 77: Expenses: Roof penetrations, flashings & edge details — all zones — Materials/Plant/Sublet 8902.64
- 92: Expenses: Dry coolers / adiabatic units (10 nr) — installation & connection — Materials/Plant/Sublet 118851
- 104: Expenses: Primary substation & switchrooms — mechanical cooling & ventilation — Materials/Plant/Sublet 90551.2
- 111: Expenses: 20/0.4 kV hall substations & LV switchboards (4 nr) — Materials/Plant/Sublet 174491
- 134: Expenses: Substation & electrical rooms — finishes, signage & access — Materials/Plant/Sublet 31334.9
- 146: Expenses: External works completion & as-built survey — Materials/Plant/Sublet 13223.8
- 82: Expenses: 20 kV switchgear & protection panels — installation & hall HV cabling — Materials/Plant/Sublet 399666
- 88: Expenses: Generator control, synchronising & paralleling gear — Materials/Plant/Sublet 250827
- 81: Expenses: 110/20 kV transformers — offloading, installation, oil filling & connection — Materials/Plant/Sublet 595819
- 105: Expenses: HVAC terminal units, diffusers & grilles — Halls 1 & 2 — Materials/Plant/Sublet 281102
- 147: Expenses: Shared infrastructure — pre-commissioning, flushing & static checks — Materials/Plant/Sublet 8266.04
- 89: Expenses: Standby generator acoustic & emissions compliance test (45 dB(A) NE boundary) — Materials/Plant/Sublet 37677.8
- 130: Expenses: Hall 1 — white space fit-out, raised floor & finishes — Materials/Plant/Sublet 45896.2

| ID | Activity | Type | Duration | Start | Finish | Predecessors | Total float | Resources | Cost |
| --- | --- | --- | --- | --- | --- | --- | --- | --- | --- |
| 126 | DCIM — monitoring, metering & EPMS integration |  | 15d | 2027-01-04 | 2027-01-22 | 111 | 42d | Controls [720 h] | 642,466 |
| 83 | 110 kV cable pulling, terminations & protection commissioning |  | 12d | 2027-01-04 | 2027-01-19 | 81, 82 | 11d | Electrical [768 h] | 711,787 |
| 148 | Hall 1 — pre-commissioning, flushing & static checks |  | 10d | 2027-01-15 | 2027-01-28 | 112, 117, 124, 125, 130 SS+10d | 18d | Commissioning [480 h] | 70,420.8 |
| 85 | DNO outage window — witness testing & grid energisation (earliest firm 2027-03-12) |  | 10d | 2027-01-20 | 2027-02-02 | 83, 84 | 11d | DNO/Electrical [480 h] | 314,789 |
| 131 | Hall 2 — white space fit-out, raised floor & finishes (trade-follow) |  | 16d | 2027-01-25 | 2027-02-15 | 130 SS+16d | 0d | Fit-Out [3072 h] | 398,419 |
| 119 | Primary substation — LV distribution, control & metering |  | 14d | 2027-02-03 | 2027-02-22 | 86 | 21d | Electrical [896 h] | 544,246 |
| 149 | Hall 1 & shared infrastructure — L1–L3 system commissioning (power, cooling, life safety) |  | 12d | 2027-02-03 | 2027-02-18 | 86, 110, 147, 148 SS+6d | 11d | Commissioning [1152 h] | 169,009.92 |
| 86 | M — Grid energisation achieved (110/20 kV energised) | milestone | 0d | 2027-02-03 | 2027-02-03 | 85 | 11d |  |  |
| 132 | Hall 3 — white space fit-out, raised floor & finishes |  | 14d | 2027-02-16 | 2027-03-05 | 131 SS+16d | 0d | Fit-Out [2240 h] | 290,935 |
| 156 | Hall 2 — pre-commissioning, flushing & static checks |  | 10d | 2027-02-16 | 2027-03-01 | 131, 112, 124 | 4d | Commissioning [480 h] | 70,420.8 |
| 154 | Section 1 & shared — as-built documentation, O&M manuals & commissioning records |  | 20d | 2027-02-19 | 2027-03-18 | 149 | 53d | Documents [640 h] | 78,921 |
| 150 | Hall 1 — L4 integrated systems test (IST) |  | 10d | 2027-02-23 | 2027-03-08 | 119, 126, 128, 149 | 21d | Commissioning [640 h] | 127,239 |
| 157 | Hall 2 — L1–L3 system commissioning |  | 12d | 2027-03-02 | 2027-03-17 | 156, 149 | 4d | Commissioning [1152 h] | 169,009.92 |
| 133 | Hall 4 — white space fit-out, raised floor & finishes (trade-follow) |  | 14d | 2027-03-08 | 2027-03-25 | 132 SS+14d | 0d | Fit-Out [2240 h] | 290,935 |
| 162 | Hall 3 — pre-commissioning, flushing & static checks |  | 10d | 2027-03-08 | 2027-03-19 | 99, 102, 113, 116, 118, 122, 132 | 2d | Commissioning [480 h] | 70,420.8 |
| 151 | Hall 1 & shared — L5 24-hour load-bank test (generator window 09:00–16:00) |  | 8d | 2027-03-09 | 2027-03-18 | 150, 89 | 21d | Commissioning [512 h] | 102,597 |
| 152 | Hall 1 — Tenant technical acceptance & witness testing |  | 8d | 2027-03-09 | 2027-03-18 | 150 | 48d | Commissioning [256 h] | 47,272 |
| 158 | Hall 2 — L4 integrated systems test (IST) |  | 10d | 2027-03-18 | 2027-03-31 | 157, 126 | 12d | Commissioning [640 h] | 119,186 |
| 153 | Hall 1 — occupancy inspection (käyttöönottotarkastus) |  | 5d | 2027-03-19 | 2027-03-25 | 142, 151, 152 | 48d | Commissioning [120 h] | 28,387 |
| 163 | Hall 3 — L1–L3 system commissioning |  | 12d | 2027-03-22 | 2027-04-06 | 162, 157 | 2d | Commissioning [1152 h] | 169,009.92 |
| 155 | M — SECTION 1 TAKING OVER (contract 2027-05-02, day 279; LD EUR 18,000/day) [ZERO FLOAT — depends on the advance transformer order (decision D1) and the DNO 110 kV window from 2027-03-12 (decision D2); second-shift reserve pre-authorisation required] | milestone | 0d | 2027-03-26 | 2027-03-26 | 153, 154, 146 | 48d |  |  |
| 168 | Hall 4 — pre-commissioning, flushing & static checks |  | 10d | 2027-03-26 | 2027-04-08 | 100, 103, 114, 123, 133 | 0d | Commissioning [480 h] | 70,420.8 |
| 174 | Snagging, defects rectification & final clean — whole site |  | 25d | 2027-03-26 | 2027-04-29 | 133, 137 | 23d | Fit-Out [4000 h] | 485,320 |
| 159 | Hall 2 — L5 24-hour load-bank test |  | 8d | 2027-04-01 | 2027-04-12 | 158, 151 | 12d | Commissioning [512 h] | 94,544 |
| 164 | Hall 3 — L4 integrated systems test (IST) |  | 10d | 2027-04-07 | 2027-04-20 | 163, 126 | 6d | Commissioning [640 h] | 107,107 |
| 169 | Hall 4 — L1–L3 system commissioning |  | 12d | 2027-04-09 | 2027-04-26 | 168, 163 | 0d | Commissioning [1152 h] | 169,009.92 |
| 160 | Hall 2 — occupancy inspection & Tenant technical acceptance |  | 8d | 2027-04-13 | 2027-04-22 | 159 | 28d | Commissioning [256 h] | 41,232 |
| 165 | Hall 3 — L5 24-hour load-bank test |  | 8d | 2027-04-21 | 2027-04-30 | 164, 159 | 6d | Commissioning [512 h] | 86,491 |
| 161 | M — SECTION 2 TAKING OVER (contract 2027-07-02; LD EUR 12,000/day) | milestone | 0d | 2027-04-23 | 2027-04-23 | 160 | 28d |  |  |
| 170 | Hall 4 — L4 integrated systems test (IST) |  | 10d | 2027-04-27 | 2027-05-10 | 169, 126 | 0d | Commissioning [640 h] | 107,107 |
| 166 | Hall 3 — occupancy inspection & Tenant technical acceptance |  | 8d | 2027-05-03 | 2027-05-12 | 165 | 14d | Commissioning [256 h] | 39,219 |
| 175 | Statutory inspections, warranties, O&M handover & operator training |  | 15d | 2027-05-03 | 2027-05-21 | 136, 165 | 7d | Compliance [480 h] | 89,400 |
| 171 | Hall 4 — L5 24-hour load-bank test |  | 8d | 2027-05-11 | 2027-05-20 | 170, 165 | 0d | Commissioning [512 h] | 86,491 |
| 167 | M — SECTION 3 TAKING OVER (contract 2027-10-02) | milestone | 0d | 2027-05-13 | 2027-05-13 | 166 | 14d |  |  |
| 172 | Hall 4 & NOC — occupancy inspection & Tenant technical acceptance |  | 8d | 2027-05-21 | 2027-06-01 | 127, 135, 171 | 0d | Commissioning [256 h] | 39,219 |
| 176 | M — SECTION 4 / WHOLE OF THE WORKS TAKING OVER (contract 2028-01-02) | milestone | 0d | 2027-06-02 | 2027-06-02 | 155, 161, 167, 172, 173, 174, 175 | 0d |  |  |

Notes:
- 126: Expenses: DCIM — monitoring, metering & EPMS integration — Materials/Plant/Sublet 175582
- 83: Expenses: 110 kV cable pulling, terminations & protection commissioning — Materials/Plant/Sublet 455843
- 85: Expenses: DNO outage window — witness testing & grid energisation (earliest firm 2027-03-12) — Materials/Plant/Sublet 192514
- 131: Expenses: Hall 2 — white space fit-out, raised floor & finishes (trade-follow) — Materials/Plant/Sublet 25693.2
- 119: Expenses: Primary substation — LV distribution, control & metering — Materials/Plant/Sublet 245645
- 132: Expenses: Hall 3 — white space fit-out, raised floor & finishes — Materials/Plant/Sublet 19155.8
- 154: Expenses: Section 1 & shared — as-built documentation, O&M manuals & commissioning records — Materials/Plant/Sublet 2.6
- 150: Expenses: Hall 1 — L4 integrated systems test (IST) — Materials/Plant/Sublet 33344.6
- 133: Expenses: Hall 4 — white space fit-out, raised floor & finishes (trade-follow) — Materials/Plant/Sublet 19155.8
- 151: Expenses: Hall 1 & shared — L5 24-hour load-bank test (generator window 09:00–16:00) — Materials/Plant/Sublet 27481.5
- 152: Expenses: Hall 1 — Tenant technical acceptance & witness testing — Materials/Plant/Sublet 9714.24
- 158: Expenses: Hall 2 — L4 integrated systems test (IST) — Materials/Plant/Sublet 25291.6
- 153: Expenses: Hall 1 — occupancy inspection (käyttöönottotarkastus) — Materials/Plant/Sublet 10781.8
- 159: Expenses: Hall 2 — L5 24-hour load-bank test — Materials/Plant/Sublet 19428.5
- 164: Expenses: Hall 3 — L4 integrated systems test (IST) — Materials/Plant/Sublet 13212.6
- 160: Expenses: Hall 2 — occupancy inspection & Tenant technical acceptance — Materials/Plant/Sublet 3674.24
- 165: Expenses: Hall 3 — L5 24-hour load-bank test — Materials/Plant/Sublet 11375.5
- 170: Expenses: Hall 4 — L4 integrated systems test (IST) — Materials/Plant/Sublet 13212.6
- 166: Expenses: Hall 3 — occupancy inspection & Tenant technical acceptance — Materials/Plant/Sublet 1661.24
- 171: Expenses: Hall 4 — L5 24-hour load-bank test — Materials/Plant/Sublet 11375.5
- 172: Expenses: Hall 4 & NOC — occupancy inspection & Tenant technical acceptance — Materials/Plant/Sublet 1661.24
