# Polaris DC-1

Schedule from Primavera P6, 2026-03-02 to 2027-01-21, costs in USD.
Must finish by 2027-01-21

## Resources

| Resource | Group |
| --- | --- |
| Management | labor |
| Civil | labor |
| Structural | labor |
| Envelope | labor |
| Mechanical | labor |
| Commissioning | labor |
| Architectural | labor |
| Electrical | labor |

## Schedule

| ID | Activity | Type | Duration | Start | Finish | Predecessors | Total float | Resources | Cost |
| --- | --- | --- | --- | --- | --- | --- | --- | --- | --- |
| 1 | Mobilisation & Site Establishment |  | 15d | 2026-03-02 | 2026-03-20 |  | 0d | Management [960 h] |  |
| 2 | Early Procurement — Long-Lead Items |  | 10d | 2026-03-23 | 2026-04-03 | 1 | 0d | Management [240 h] |  |
| 4 | Site Clearance & Tree Removal |  | 8d | 2026-03-23 | 2026-04-01 | 1 | 2d | Civil [384 h] |  |
| 19 | Generator Compound — Foundations & Enclosure |  | 15d | 2026-04-02 | 2026-04-22 | 4 | 141d | Civil [720 h] |  |
| 45 | Hall 2 — Site Clearance & Earthworks (Zone 2) |  | 15d | 2026-04-02 | 2026-04-22 | 4 | 87d | Civil [600 h] |  |
| 5 | Earthworks & Excavation (All Halls) |  | 20d | 2026-04-02 | 2026-04-29 | 4 | 2d | Civil [800 h] |  |
| 56 | Hall 3 — Site Clearance & Earthworks (Zone 3) |  | 12d | 2026-04-02 | 2026-04-17 | 4 | 98d | Civil [480 h] |  |
| 14 | Procurement — 110/20 kV Transformers (2×16 MVA) |  | 140d | 2026-04-06 | 2026-10-16 | 2 | 0d | Management [2240 h] |  |
| 20 | Procurement — 8×2.5 MVA Generators |  | 100d | 2026-04-06 | 2026-08-21 | 2 | 54d | Management [1600 h] |  |
| 3 | Design Submissions & Approvals |  | 20d | 2026-04-06 | 2026-05-01 | 2 | 188d | Management [640 h] |  |
| 6 | Rock Blasting (East Zone, Hall 4) |  | 15d | 2026-04-09 | 2026-04-29 | 4 FS+5d | 15d | Civil [480 h] |  |
| 57 | Hall 3 — Rock Pad Foundations |  | 12d | 2026-04-20 | 2026-05-05 | 56 | 98d | Civil [576 h] | 800,000 |
| 46 | Hall 2 — Pad Foundations (Glacial Till) |  | 20d | 2026-04-23 | 2026-05-20 | 45 | 87d | Civil [1280 h] | 570,000 |
| 67 | Hall 4 — Site Clearance & Earthworks (Zone 4) |  | 10d | 2026-04-30 | 2026-05-13 | 6 | 89d | Civil [400 h] |  |
| 7 | Pad Foundations — Glacial Till (Halls 1&2) |  | 25d | 2026-04-30 | 2026-06-03 | 5 | 2d | Civil [3200 h] | 1,140,000 |
| 8 | Rock Pad Foundations (Hall 3) |  | 15d | 2026-04-30 | 2026-05-20 | 5 | 12d | Civil [720 h] | 800,000 |
| 9 | Rock-Pier Foundations (Hall 4) |  | 12d | 2026-04-30 | 2026-05-15 | 6 | 15d | Civil [576 h] | 950,000 |
| 58 | Hall 3 — Steel Frame (112 t) |  | 12d | 2026-05-06 | 2026-05-21 | 57 | 98d | Structural [960 h] | 275,000 |
| 68 | Hall 4 — Rock-Pier Foundations |  | 10d | 2026-05-14 | 2026-05-27 | 67 | 89d | Civil [480 h] | 950,000 |
| 69 | Hall 4 — Admin Block Foundations |  | 8d | 2026-05-14 | 2026-05-25 | 67 | 119d | Civil [384 h] |  |
| 47 | Hall 2 — Steel Frame (112 t) |  | 12d | 2026-05-21 | 2026-06-05 | 46 | 87d | Structural [960 h] | 275,000 |
| 59 | Hall 3 — Metal Deck & Precast Panels |  | 10d | 2026-05-22 | 2026-06-04 | 58 | 98d | Structural [640 h] |  |
| 70 | Hall 4 — Steel Frame & Precast Panels |  | 18d | 2026-05-28 | 2026-06-22 | 68 | 89d | Structural [1440 h] | 275,000 |
| 10 | Ground Beams & Ground-Bearing Slab (All Halls) |  | 25d | 2026-06-04 | 2026-07-08 | 7, 8, 9 | 2d | Civil [2000 h] | 1,560,000 |
| 11 | Primary Substation — Foundation & Cable Basement |  | 15d | 2026-06-04 | 2026-06-24 | 7 | 57d | Civil [960 h] |  |
| 60 | Hall 3 — Roof & Cladding |  | 10d | 2026-06-05 | 2026-06-18 | 59 | 98d | Envelope [640 h] |  |
| 48 | Hall 2 — Metal Deck & Precast Panels |  | 10d | 2026-06-08 | 2026-06-19 | 47 | 87d | Structural [640 h] |  |
| 61 | Hall 3 — MEP Rough-In (CRAH, UPS, Electrical) |  | 25d | 2026-06-19 | 2026-07-23 | 60 | 98d | Mechanical [1600 h] |  |
| 49 | Hall 2 — Roof & Cladding |  | 10d | 2026-06-22 | 2026-07-03 | 48 | 87d | Envelope [640 h] |  |
| 71 | Hall 4 — Roof, Cladding & Louvres |  | 10d | 2026-06-23 | 2026-07-06 | 70 | 89d | Envelope [640 h] |  |
| 12 | Primary Substation — Superstructure |  | 15d | 2026-06-25 | 2026-07-15 | 11 | 57d | Structural [720 h] |  |
| 63 | Hall 3 — Fire Detection, Suppression, BMS |  | 8d | 2026-07-02 | 2026-07-13 | 61 FF-8d | 114d | Commissioning [256 h] |  |
| 50 | Hall 2 — MEP Rough-In (CRAH, UPS, Electrical) |  | 25d | 2026-07-06 | 2026-08-07 | 49 | 87d | Mechanical [1600 h] |  |
| 72 | External Works — Roads, Fencing, Gatehouse |  | 20d | 2026-07-07 | 2026-08-03 | 71, 69 | 89d | Civil [1280 h] | 1,850,000 |
| 73 | Hall 4 — MEP & Architectural Finishes |  | 25d | 2026-07-07 | 2026-08-10 | 71 | 94d | Mechanical [1600 h] |  |
| 24 | Shared Spine — Foundations & Mezzanine |  | 12d | 2026-07-09 | 2026-07-24 | 10 | 57d | Civil [768 h] |  |
| 29 | Hall 1 — Steel Frame (449 t) |  | 20d | 2026-07-09 | 2026-08-05 | 10 | 2d | Structural [1600 h] | 1,100,000 |
| 13 | Primary Substation — Switchgear Room & Cable Basement Finish |  | 10d | 2026-07-16 | 2026-07-29 | 12 | 57d | Civil [320 h] |  |
| 52 | Hall 2 — Fire Detection, Suppression, BMS |  | 8d | 2026-07-17 | 2026-07-28 | 50 FF-8d | 103d | Commissioning [256 h] |  |
| 75 | Hall 4 — Fire Detection, Suppression, BMS |  | 8d | 2026-07-20 | 2026-07-29 | 73 FF-8d | 102d | Commissioning [256 h] |  |
| 62 | Hall 3 — Architectural Finishes |  | 8d | 2026-07-24 | 2026-08-04 | 61 | 98d | Architectural [384 h] |  |
| 25 | Shared Spine — Mechanical (Pipework, Pumps, Valves, Heat Recovery) |  | 18d | 2026-07-27 | 2026-08-19 | 24 | 57d | Mechanical [1152 h] | 3,200,000 |
| 26 | Shared Spine — Dry Coolers & Cooling Towers |  | 10d | 2026-08-03 | 2026-08-14 | 25 SS+5d | 74d | Mechanical [480 h] |  |
| 74 | External Works — Landscaping & Tree Replacement |  | 10d | 2026-08-04 | 2026-08-17 | 72 | 89d | Civil [320 h] |  |
| 30 | Hall 1 — Metal Deck & Precast Panels (64+) |  | 13d | 2026-08-06 | 2026-08-24 | 29 | 3d | Structural [832 h] | 780,000 |
| 31 | Hall 1 — Warm Roof (6,912 m²) |  | 14d | 2026-08-06 | 2026-08-25 | 29 | 2d | Envelope [896 h] | 1,040,000 |
| 51 | Hall 2 — Architectural Finishes |  | 8d | 2026-08-10 | 2026-08-19 | 50 | 87d | Architectural [384 h] |  |
| 27 | Shared Spine — Electrical Distribution & Switchgear |  | 14d | 2026-08-20 | 2026-09-08 | 25 | 57d | Electrical [672 h] |  |
| 21 | Generator Installation (8 Units) |  | 10d | 2026-08-24 | 2026-09-04 | 19, 20 | 54d | Electrical [480 h] | 1,350,000 |
| 32 | Hall 1 — External Cladding & Acoustic Louvres |  | 13d | 2026-08-26 | 2026-09-11 | 30, 31 | 2d | Envelope [832 h] | 1,760,000 |
| 22 | Fuel Systems, Bunding & Day Tanks |  | 5d | 2026-09-07 | 2026-09-11 | 21 | 54d | Mechanical [160 h] |  |
| 28 | Spine Pre-Commissioning Checks |  | 3d | 2026-09-09 | 2026-09-11 | 26, 27 | 57d | Commissioning [96 h] |  |
| 23 | Generator Pre-Commissioning Checks |  | 3d | 2026-09-14 | 2026-09-16 | 22 | 54d | Commissioning [96 h] |  |
| 33 | Hall 1 — MEP Rough-In (CRAH, UPS, Electrical) |  | 45d | 2026-09-14 | 2026-11-13 | 32 | 2d | Mechanical [7200 h] | 4,370,000 |
| 15 | Transformer Installation & Termination |  | 10d | 2026-10-19 | 2026-10-30 | 13, 14 | 0d | Electrical [480 h] |  |
| 35 | Hall 1 — Fire Detection, Suppression, BMS/DCIM |  | 10d | 2026-10-19 | 2026-10-30 | 33 FF-10d | 22d | Commissioning [480 h] |  |
| 16 | 110 kV Termination, Metering & Protection |  | 10d | 2026-11-02 | 2026-11-13 | 15 | 0d | Electrical [320 h] |  |
| 17 | 20 kV Ring Main Switchboard (14 Panels) |  | 8d | 2026-11-02 | 2026-11-11 | 15 | 2d | Electrical [256 h] | 2,650,000 |
| 18 | Cable Pulling & Termination (Substation) |  | 12d | 2026-11-16 | 2026-12-01 | 16, 17 | 0d | Electrical [576 h] |  |
| 34 | Hall 1 — Architectural Finishes (Screed, Containment, Partitions) |  | 10d | 2026-11-16 | 2026-11-27 | 33 | 2d | Architectural [640 h] |  |
| 36 | Pre-Commissioning Check — Section 1 |  | 3d | 2026-12-02 | 2026-12-04 | 18, 23, 28, 34, 35 | 0d | Commissioning [96 h] |  |
| 44 | TARGET: Section 1 Energised (Substation Live) | milestone | 0d | 2026-12-02 | 2026-12-02 | 18, 23, 28 | 13d |  |  |
| 53 | Pre-Commissioning Check — Section 2 |  | 3d | 2026-12-02 | 2026-12-04 | 44, 51, 52 | 13d | Commissioning [96 h] |  |
| 64 | Pre-Commissioning Check — Section 3 |  | 3d | 2026-12-02 | 2026-12-04 | 44, 62, 63 | 13d | Commissioning [96 h] |  |
| 76 | Pre-Commissioning Check — Section 4 |  | 3d | 2026-12-02 | 2026-12-04 | 44, 73, 74, 75 | 13d | Commissioning [96 h] |  |
| 37 | Commissioning — L1 Factory Acceptance Tests |  | 5d | 2026-12-07 | 2026-12-11 | 36 | 0d | Commissioning [160 h] | 620,000 |
| 54 | Commissioning — Section 2 (L1-L5) |  | 15d | 2026-12-07 | 2026-12-25 | 53 | 13d | Commissioning [720 h] |  |
| 65 | Commissioning — Section 3 (L1-L5) |  | 15d | 2026-12-07 | 2026-12-25 | 64 | 13d | Commissioning [720 h] |  |
| 77 | Commissioning — Section 4 (L1-L5) |  | 15d | 2026-12-07 | 2026-12-25 | 76 | 13d | Commissioning [720 h] |  |
| 38 | Commissioning — L2/L3 Static Inspection & Component Start-Up |  | 8d | 2026-12-14 | 2026-12-23 | 37 | 0d | Commissioning [384 h] |  |

Notes:
- 57: Expenses: Hall 3 — Rock Pad Foundations — Materials/Plant/Sublet 800000
- 46: Expenses: Hall 2 — Pad Foundations (Glacial Till) — Materials/Plant/Sublet 570000
- 7: Expenses: Pad Foundations — Glacial Till (Halls 1&2) — Materials/Plant/Sublet 1140000
- 8: Expenses: Rock Pad Foundations (Hall 3) — Materials/Plant/Sublet 800000
- 9: Expenses: Rock-Pier Foundations (Hall 4) — Materials/Plant/Sublet 950000
- 58: Expenses: Hall 3 — Steel Frame (112 t) — Materials/Plant/Sublet 275000
- 68: Expenses: Hall 4 — Rock-Pier Foundations — Materials/Plant/Sublet 950000
- 47: Expenses: Hall 2 — Steel Frame (112 t) — Materials/Plant/Sublet 275000
- 70: Expenses: Hall 4 — Steel Frame & Precast Panels — Materials/Plant/Sublet 275000
- 10: Expenses: Ground Beams & Ground-Bearing Slab (All Halls) — Materials/Plant/Sublet 1560000
- 72: Expenses: External Works — Roads, Fencing, Gatehouse — Materials/Plant/Sublet 1850000
- 29: Expenses: Hall 1 — Steel Frame (449 t) — Materials/Plant/Sublet 1100000
- 25: Expenses: Shared Spine — Mechanical (Pipework, Pumps, Valves, Heat Recovery) — Materials/Plant/Sublet 3200000
- 30: Expenses: Hall 1 — Metal Deck & Precast Panels (64+) — Materials/Plant/Sublet 780000
- 31: Expenses: Hall 1 — Warm Roof (6,912 m²) — Materials/Plant/Sublet 1040000
- 21: Expenses: Generator Installation (8 Units) — Materials/Plant/Sublet 1350000
- 32: Expenses: Hall 1 — External Cladding & Acoustic Louvres — Materials/Plant/Sublet 1760000
- 33: Expenses: Hall 1 — MEP Rough-In (CRAH, UPS, Electrical) — Materials/Plant/Sublet 4370000
- 17: Expenses: 20 kV Ring Main Switchboard (14 Panels) — Materials/Plant/Sublet 2650000
- 37: Expenses: Commissioning — L1 Factory Acceptance Tests — Materials/Plant/Sublet 620000

| ID | Activity | Type | Duration | Start | Finish | Predecessors | Total float | Resources | Cost |
| --- | --- | --- | --- | --- | --- | --- | --- | --- | --- |
| 39 | Commissioning — L4 Integrated Systems Testing |  | 12d | 2026-12-24 | 2027-01-08 | 38 | 0d | Commissioning [576 h] | 540,000 |
| 55 | Statutory Inspections & Handover — Section 2 |  | 5d | 2026-12-28 | 2027-01-01 | 54 | 13d | Commissioning [160 h] |  |
| 66 | Statutory Inspections & Handover — Section 3 |  | 5d | 2026-12-28 | 2027-01-01 | 65 | 13d | Commissioning [160 h] |  |
| 78 | Statutory Inspections & Handover — Section 4 |  | 5d | 2026-12-28 | 2027-01-01 | 77 | 13d | Commissioning [160 h] |  |
| 79 | As-Built Documentation & Training — All Sections |  | 5d | 2026-12-28 | 2027-01-01 | 77 | 13d | Management [160 h] |  |
| 40 | Commissioning — L5 24-hr Load Bank Test |  | 3d | 2027-01-11 | 2027-01-13 | 39 | 0d | Commissioning [144 h] | 350,000 |
| 41 | Statutory Inspections & Occupancy — Section 1 |  | 3d | 2027-01-14 | 2027-01-18 | 40 | 2d | Commissioning [96 h] |  |
| 42 | As-Built Documentation & O&M Manuals — Section 1 |  | 5d | 2027-01-14 | 2027-01-20 | 40 | 0d | Management [160 h] |  |
| 43 | Handover — Section 1 (Milestone) | milestone | 0d | 2027-01-21 | 2027-01-21 | 41, 42 | 0d |  |  |
| 80 | PROJECT COMPLETION (Milestone) | milestone | 0d | 2027-01-21 | 2027-01-21 | 43, 55, 66, 78, 79, 3 | 0d |  |  |

Notes:
- 39: Expenses: Commissioning — L4 Integrated Systems Testing — Materials/Plant/Sublet 540000
- 40: Expenses: Commissioning — L5 24-hr Load Bank Test — Materials/Plant/Sublet 350000
