# Polaris DC-1 - Aviapolis Data Campus Phase 1

Schedule from Primavera P6, 2026-01-16 to 2028-02-23, data date 2026-09-16, costs in EUR.
Must finish by 2028-02-23

## Calendars

- Finland Site 5-Day + Public Holidays: Mon-Fri 06:00-22:00; Sat-Sun off.

## Resources

| Resource | Group |
| --- | --- |
| Site Management | labor |
| Civil Crew | labor |
| Earthworks Crew | labor |
| Environmental Crew | labor |
| Design Team | labor |
| Engineer (3rd party) | labor |
| Blasting Crew | labor |
| Concrete Crew | labor |
| Piling Crew | labor |
| Steel Fabricator (offsite) | equipment |
| Precast Fabricator (offsite) | equipment |
| Structural Steel Crew | labor |
| Precast Crew | labor |
| Facade Crew | labor |
| Electrical Crew | labor |
| Transformer Fabricator (offsite) | equipment |
| Switchgear Fabricator (offsite) | equipment |
| Generator Fabricator (offsite) | equipment |
| Mechanical Fabricator (offsite) | equipment |
| Mechanical Crew | labor |
| UPS Fabricator (offsite) | equipment |
| Battery Fabricator (offsite) | equipment |
| Busway Fabricator (offsite) | equipment |
| Fit-Out Crew | labor |
| Fire Systems Fabricator (offsite) | equipment |
| ELV Crew | labor |
| BMS Crew | labor |
| Commissioning Team | labor |

## Schedule

| ID | WBS | Activity | Type | Duration | Start | Finish | Predecessors | Free float | Resources | Cost |
| --- | --- | --- | --- | --- | --- | --- | --- | --- | --- | --- |
|  | 00.Mobilis | **Mobilisation** |  |  | 2026-03-02 | 2028-02-23 |  |  |  |  |
| A1000 |  | Contract Award / Notice to Proceed | milestone | 0d | 2026-03-02 | 2026-03-02 |  | 0d |  |  |
| A1010 |  | Statutory Supervisors Appointed & Approved (vastaava tyonjohtaja, KVV, IV) |  | 15d | 2026-03-03 | 2026-03-23 | A1000 | 0d | Site Management [60 h] | 215,609.78 |
| A1020 |  | Site Establishment: Offices, Welfare, Hoarding |  | 15d | 2026-03-03 | 2026-03-23 | A1000 | 0d | Site Management [120 h] | 1,211,520.77 |
| A1070 |  | General Overheads & Site Management (running, whole programme) |  | 460d | 2026-03-03 | 2028-02-23 | A1000 | 0d | Site Management [5520 h] | 2,495,938.91 |
| A1030 |  | Temporary Power, Water, Telecoms |  | 10d | 2026-03-10 | 2026-03-23 | A1020 SS+5d | 0d | Civil Crew [40 h] | 349,082.71 |
| A1040 |  | Tower/Mobile Cranage, Hoisting & Access Mobilisation |  | 10d | 2026-03-10 | 2026-03-23 | A1020 SS+5d | 0d | Site Management [40 h] | 1,006,177.57 |
| A1050 |  | Temporary Haul Road & Site Access (from Tikkurilantie) |  | 10d | 2026-03-10 | 2026-03-23 | A1020 SS+5d | 0d | Earthworks Crew [80 h] |  |
| A1060 |  | Environmental Controls: Vibration & Noise Monitoring Set-up |  | 10d | 2026-03-10 | 2026-03-23 | A1020 SS+5d | 0d | Environmental Crew [40 h] | 272,079.14 |
|  | 01.Design | **Design** |  |  | 2026-03-03 | 2026-08-24 |  |  |  |  |
| A2000 |  | Concept Design - Stage 1 (whole site) |  | 20d | 2026-03-03 | 2026-03-30 | A1000 | 0d | Design Team [200 h] |  |
| A2010 |  | Engineer Review - Stage 1 (14 days per SP-20) |  | 10d | 2026-03-31 | 2026-04-15 | A2000 | 0d | Engineer (3rd party) [10 h] |  |
| A2060 |  | Substation/Switchgear Design - DNO Compatibility Review Submission |  | 10d | 2026-04-09 | 2026-04-22 | A2000 FS+5d | 0d | Design Team [40 h] |  |
| A2100 |  | Fire Engineering Approval Submission - Data Hall Suppression (AHJ) |  | 15d | 2026-04-09 | 2026-04-29 | A2000 FS+5d | 0d | Design Team [60 h] |  |
| A2020 |  | Detailed Design - Section 1 (Hall1/Substation/GenComp) - Stage 2 |  | 40d | 2026-04-16 | 2026-06-12 | A2010 | 0d | Design Team [560 h] |  |
| A2070 |  | DNO Compatibility Review (>=12wk before switchgear order, per Grid Offer 4.2) |  | 15d | 2026-04-23 | 2026-05-15 | A2060 | 0d | Engineer (3rd party) [15 h] |  |
| A2120 |  | Blasting Design & Method Statement (Generator Compound + Hall 4 zones) |  | 15d | 2026-04-23 | 2026-05-15 | A2020 SS+5d | 0d | Design Team [45 h] |  |
| A2110 |  | Fire Engineering / AHJ Approval - Data Hall Suppression System |  | 30d | 2026-04-30 | 2026-06-12 | A2100 | 0d | Engineer (3rd party) [30 h] |  |
| A2040 |  | Detailed Design - Sections 2-4 (rolling, staggered) |  | 50d | 2026-05-08 | 2026-08-10 | A2020 SS+15d | 0d | Design Team [500 h] |  |
| A2080 |  | Protection Coordination Study Submission (110/20kV) |  | 15d | 2026-05-18 | 2026-06-05 | A2070 | 0d | Design Team [60 h] |  |
| A2090 |  | DNO Protection Study Review & Approval (20 working days) |  | 20d | 2026-06-08 | 2026-07-27 | A2080 | 0d | Engineer (3rd party) [20 h] |  |
| A2030 |  | Engineer Review - Section 1 Detailed Design (21 days per SP-20) |  | 15d | 2026-06-15 | 2026-07-27 | A2020 | 0d | Engineer (3rd party) [15 h] |  |
| A2050 |  | Construction Issue Documents - Stage 3, all Sections (14-day review) |  | 20d | 2026-07-28 | 2026-08-24 | A2030, A2040 SS+30d | 0d | Design Team [160 h] |  |
|  | 04.Section | **Section1** |  |  | 2026-01-16 | 2027-04-21 |  |  |  |  |
| A4190 |  | Advance Procurement - 110/20kV Transformers, 2x16MVA (52wk lead; ADVANCE ORDER pre-Commencement, see BOS Assumption 1) |  | 260d | 2026-01-16 | 2027-01-14 |  | 0d | Transformer Fabricator (offsite) [260 h] | 2,615,354.18 |
| A4000 |  | Sitewide Clearance & Topsoil Strip (26,565 m2) |  | 15d | 2026-03-24 | 2026-04-15 | A1010, A1050 | 0d | Earthworks Crew [180 h] | 226,543.75 |
| A4080 |  | Structural Steel Release & Fabrication - Hall1/Spine/Substation/GenComp (18wk lead) |  | 90d | 2026-04-13 | 2026-08-14 | A2020 FS+10d | 0d | Steel Fabricator (offsite) [90 h] | 1,323,487.79 |
| A4240 |  | Standby Generators - Procurement, 8x2.5MVA (40wk) |  | 200d | 2026-04-13 | 2027-01-15 | A2020 FS+10d | 0d | Generator Fabricator (offsite) [200 h] | 8,732,624.3 |
| A4020 |  | Bulk Earthworks - Hall1/Substation Zone (till) |  | 15d | 2026-04-16 | 2026-05-07 | A4000 | 0d | Earthworks Crew [240 h] | 199,800.73 |
| A4260 |  | Chillers - Procurement, 4nr N+1 (26wk) |  | 130d | 2026-04-27 | 2026-10-23 | A2020 FS+10d | 0d | Mechanical Fabricator (offsite) [130 h] | 2,323,611.94 |
| A4310 |  | UPS Modules - Procurement, Hall1 batch 4nr (30wk) |  | 150d | 2026-04-27 | 2026-11-20 | A2020 FS+20d | 0d | UPS Fabricator (offsite) [150 h] | 824,501.55 |
| A4410 |  | Site Access Road, Gatehouse Structure & Fit-Out |  | 25d | 2026-04-30 | 2026-06-05 | A4020 SS+10d | 0d | Civil Crew [250 h] | 757,636.97 |
| A4090 |  | Precast Wall Panel Manufacture - Hall1/Spine/Sub/GenComp (16wk lead) |  | 80d | 2026-05-04 | 2026-08-21 | A2020 FS+15d | 0d | Precast Fabricator (offsite) [80 h] | 1,160,247.94 |
| A4270 |  | Dry Coolers / Adiabatic Units - Procurement, 10nr (22wk) |  | 110d | 2026-05-04 | 2026-10-02 | A2020 FS+15d | 0d | Mechanical Fabricator (offsite) [110 h] | 3,141,990.52 |
| A4290 |  | CRAH Units - Procurement, Hall1 batch 7nr (22wk) |  | 110d | 2026-05-04 | 2026-10-02 | A2020 FS+15d | 0d | Mechanical Fabricator (offsite) [110 h] | 594,603.6 |
| A4320 |  | Battery Systems - Procurement, Hall1 batch (24wk) |  | 120d | 2026-05-04 | 2026-10-16 | A2020 FS+25d | 0d | Battery Fabricator (offsite) [120 h] | 292,565.07 |
| A4040 |  | Foundations - Data Hall 1 (pad/strip on till) |  | 15d | 2026-05-08 | 2026-05-29 | A4020 | 0d | Concrete Crew [240 h] | 158,841.17 |
| A4050 |  | Foundations - Primary Substation Building (incl. cable basement waterproofing) |  | 15d | 2026-05-08 | 2026-05-29 | A4020 | 0d | Concrete Crew [180 h] | 247,748.75 |
| A4220 |  | 20kV Switchgear & Protection - Procurement (38wk) |  | 190d | 2026-05-08 | 2027-01-28 | A2070 | 0d | Switchgear Fabricator (offsite) [190 h] | 1,489,421.81 |
| A4170 |  | Acoustic Louvre Procurement (16wk) & Installation - Cooling Yard |  | 85d | 2026-05-11 | 2026-09-29 | A2020 FS+20d | 0d | Facade Crew [510 h] | 610,897.39 |
| A4340 |  | Overhead Busway - Procurement, Hall1 batch (20wk) |  | 100d | 2026-05-11 | 2026-09-25 | A2020 FS+25d | 0d | Busway Fabricator (offsite) [100 h] | 164,900.26 |
| A4010 |  | Blasting Permit & Pre-Condition Survey - Generator Compound Zone |  | 15d | 2026-05-18 | 2026-06-05 | A4000 SS+5d, A2120 | 0d | Civil Crew [60 h] |  |
| A4390 |  | BMS/DCIM Hardware - Procurement (16wk) & Integration - Data Hall 1 |  | 85d | 2026-05-18 | 2026-10-05 | A2020 FS+30d | 0d | BMS Crew [510 h] | 401,284.31 |
| A4420 |  | Perimeter Fencing & ANPR Gates (Section 1 portion) |  | 10d | 2026-05-18 | 2026-05-29 | A4410 SS+10d | 0d | Civil Crew [60 h] | 200,648.55 |
| A4180 |  | 110kV Termination, Metering & Protection (DNO interface) |  | 20d | 2026-06-01 | 2026-06-29 | A4050 | 0d | Electrical Crew [160 h] | 1,617,973.65 |
| A4370 |  | Fire Suppression System - Procurement, Hall1 (20wk, contingent on AHJ approval) |  | 100d | 2026-06-01 | 2026-10-16 | A2110 | 0d | Fire Systems Fabricator (offsite) [100 h] | 339,548.24 |
| A4030 |  | Rock Excavation by Blasting - Generator Compound (~1,139 m3) |  | 10d | 2026-06-08 | 2026-06-22 | A4010 | 0d | Blasting Crew [80 h] | 173,034.79 |
| A4060 |  | Foundations - Generator Compound (rock-socketed piers) |  | 10d | 2026-06-23 | 2026-07-27 | A4030 | 0d | Piling Crew [80 h] | 117,784.78 |
| A4070 |  | Ground Beams, Slab & Sub-base - Hall1/Substation/GenComp |  | 20d | 2026-07-28 | 2026-08-24 | A4040, A4050, A4060 | 0d | Concrete Crew [400 h] | 1,238,248.46 |
| A4100 |  | Structural Steel Erection - Data Hall 1 |  | 10d | 2026-08-25 | 2026-09-07 | A4070, A4080 | 0d | Structural Steel Crew [180 h] | 574,855.61 |
| A4110 |  | Structural Steel Erection - Substation & Generator Compound Enclosure |  | 10d | 2026-09-01 | 2026-09-14 | A4100 SS+5d, A4060 | 0d | Structural Steel Crew [180 h] | 403,718.8 |
| A4120 |  | Precast Panel Installation - Data Hall 1 (64 nr) |  | 10d | 2026-09-08 | 2026-09-21 | A4100, A4090 | 0d | Precast Crew [140 h] | 469,624.26 |
| A4130 |  | Precast Panel Installation - Substation/GenComp |  | 10d | 2026-09-15 | 2026-09-28 | A4110, A4090 | 0d | Precast Crew [140 h] | 408,849.12 |
| A4140 |  | Metal Deck, Roof Purlins & Fire Protection - Hall1/Sub/GenComp |  | 15d | 2026-09-29 | 2026-10-19 | A4120, A4130 | 0d | Structural Steel Crew [180 h] | 555,017.63 |
| A4150 |  | Envelope - Cladding, Roofing & Airtightness - Data Hall 1 |  | 25d | 2026-10-20 | 2026-11-23 | A4140 | 0d | Facade Crew [400 h] | 1,855,759.79 |
| A4160 |  | Envelope - Cladding - Substation/Generator Compound |  | 15d | 2026-10-20 | 2026-11-09 | A4140 | 0d | Facade Crew [150 h] | 500,401.18 |
| A4280 |  | Mechanical Plant Installation - Chillers, Dry Coolers, Pumps, Pipework (shared spine) |  | 40d | 2026-11-24 | 2027-01-29 | A4260, A4270, A4150 | 0d | Mechanical Crew [640 h] | 7,852,146.46 |
| A4300 |  | CRAH Installation - Data Hall 1 (7 units) |  | 10d | 2026-11-24 | 2026-12-07 | A4290, A4150 | 0d | Mechanical Crew [80 h] |  |
| A4330 |  | UPS & Battery Installation - Data Hall 1 |  | 15d | 2026-11-24 | 2026-12-14 | A4310, A4320, A4150 | 0d | Electrical Crew [150 h] |  |
| A4350 |  | LV Distribution, Busway & Containment Installation - Data Hall 1 |  | 20d | 2026-12-15 | 2027-01-22 | A4330, A4340 | 0d | Electrical Crew [240 h] | 1,253,375.16 |
| A4200 |  | MILESTONE: Transformers Delivered to Site | milestone | 0d | 2027-01-15 | 2027-01-15 | A4190 | 0d |  |  |
| A4210 |  | Transformer Installation, Termination & Testing |  | 30d | 2027-01-18 | 2027-02-26 | A4200, A4160, A4180 | 0d | Electrical Crew [300 h] |  |
| A4250 |  | Generator Installation, Paralleling, ATS & Fuel System (48h storage) |  | 30d | 2027-01-18 | 2027-02-26 | A4240, A4110 | 0d | Electrical Crew [300 h] | 2,770,502.99 |
| A4430 |  | L1 Factory Acceptance Testing - HV, UPS, Generators, Chillers (witnessed) |  | 10d | 2027-01-18 | 2027-01-29 | A4240, A4260, A4310, A4190 | 0d | Commissioning Team [60 h] | 331,696.58 |
| A4360 |  | Data Hall Floor Finish & Cold-Aisle Containment - Data Hall 1 |  | 15d | 2027-01-25 | 2027-02-12 | A4350 | 0d | Fit-Out Crew [150 h] | 349,008.43 |
| A4230 |  | 20kV Ring Main Switchboard Installation & Protection Setting |  | 15d | 2027-01-29 | 2027-02-18 | A4220, A4160 | 0d | Electrical Crew [150 h] |  |
| A4380 |  | Fire Detection & Suppression Installation - Data Hall 1 |  | 10d | 2027-02-15 | 2027-02-26 | A4370, A4360 | 0d | ELV Crew [80 h] | 126,762.67 |
| A4400 |  | Access Control, CCTV & Security Integration - Hall1 + Gatehouse |  | 15d | 2027-02-15 | 2027-03-05 | A4360 | 0d | ELV Crew [120 h] | 465,666.07 |
| A4440 |  | L2/L3 Static Inspection & Component Start-Up - Section 1 |  | 10d | 2027-03-01 | 2027-03-12 | A4210, A4230, A4250, A4280, A4300, A4330, A4350, A4430 | 0d | Commissioning Team [80 h] | 361,851.2 |
| A4450 |  | MILESTONE: Grid Energisation - Stage 1 (DNO firm date, seasonal outage window) | milestone | 0d | 2027-03-12 | 2027-03-12 | A4210, A4230, A2090 | 0d |  |  |

| ID | WBS | Activity | Type | Duration | Start | Finish | Predecessors | Free float | Resources | Cost |
| --- | --- | --- | --- | --- | --- | --- | --- | --- | --- | --- |
| A4460 |  | L4 Integrated Systems Testing incl. Failure-Mode Demonstrations - Section 1 |  | 15d | 2027-03-15 | 2027-04-06 | A4440, A4450 | 0d | Commissioning Team [120 h] | 144,740.06 |
| A4470 |  | L5 24-Hour Load-Bank Test @ Full 10MW (temporary load banks) - Section 1 |  | 5d | 2027-04-07 | 2027-04-13 | A4460 | 0d | Commissioning Team [40 h] | 232,619.03 |
| A4480 |  | Statutory Occupancy Inspection & Tenant Technical Acceptance - Section 1 |  | 5d | 2027-04-14 | 2027-04-20 | A4470, A4400, A4420, A4390, A4380 | 0d | Commissioning Team [20 h] | 85,509.36 |
| A4490 |  | MILESTONE: SECTION 1 TAKING OVER (Data Hall 1, Substation, Generators, Cooling Spine, Access, Gatehouse) | milestone | 0d | 2027-04-21 | 2027-04-21 | A4480 | 0d |  |  |
|  | 05.Section | **Section2** |  |  | 2026-06-23 | 2027-05-26 |  |  |  |  |
| A5000 |  | Bulk Earthworks - Hall2 Zone (till) |  | 10d | 2026-06-23 | 2026-07-27 | A4020 SS+45d | 0d | Earthworks Crew [120 h] | 125,589.03 |
| A5010 |  | Foundations - Data Hall 2 |  | 15d | 2026-07-28 | 2026-08-17 | A5000 | 0d | Concrete Crew [210 h] | 1,047,207.88 |
| A5020 |  | Structural Steel Erection - Data Hall 2 (crew relocates from Hall1) |  | 10d | 2026-09-08 | 2026-09-21 | A4100, A5010, A4080 FS+15d | 0d | Structural Steel Crew [180 h] | 574,855.61 |
| A5030 |  | Precast Panel Installation - Data Hall 2 |  | 10d | 2026-09-29 | 2026-10-12 | A5020, A4120 FS+5d | 0d | Precast Crew [140 h] | 469,624.26 |
| A5040 |  | Metal Deck & Roof - Data Hall 2 |  | 10d | 2026-10-13 | 2026-10-26 | A5030 | 0d | Structural Steel Crew [100 h] | 324,954.07 |
| A5050 |  | Envelope - Cladding, Roofing & Airtightness - Data Hall 2 |  | 20d | 2026-10-27 | 2026-11-23 | A5040 | 0d | Facade Crew [280 h] | 1,737,004.11 |
| A5070 |  | CRAH Units - Hall2 Call-Off & Installation (7nr) |  | 10d | 2026-12-08 | 2026-12-21 | A4290 FS+20d, A5050, A4300 | 0d | Mechanical Crew [80 h] | 594,603.6 |
| A5080 |  | UPS & Battery Installation - Data Hall 2 |  | 15d | 2026-12-21 | 2027-01-21 | A4310 FS+20d, A4320 FS+20d, A5050 | 0d | Electrical Crew [150 h] | 1,117,066.62 |
| A5060 |  | Hall Substation TX-H2 (20/0.4kV, 3.3MVA) Installation |  | 10d | 2027-02-19 | 2027-03-04 | A5050, A4230, A4350 | 0d | Electrical Crew [80 h] | 296,997.81 |
| A5090 |  | LV Distribution, Busway & Containment - Data Hall 2 |  | 15d | 2027-03-05 | 2027-03-25 | A5080, A4340 FS+20d, A5060 | 0d | Electrical Crew [150 h] | 1,418,275.42 |
| A5100 |  | Data Hall Floor Finish & Containment - Data Hall 2 |  | 10d | 2027-03-30 | 2027-04-12 | A5090, A4360 | 0d | Fit-Out Crew [100 h] | 349,008.43 |
| A5130 |  | L1-L3 Testing & Component Start-Up - Section 2 |  | 10d | 2027-03-30 | 2027-04-12 | A5090, A5070 | 0d | Commissioning Team [60 h] | 173,386.95 |
| A5110 |  | Fire Detection & Suppression - Data Hall 2 |  | 10d | 2027-04-13 | 2027-04-26 | A4370 FS+20d, A5100, A4380 | 0d | ELV Crew [80 h] | 466,310.92 |
| A5120 |  | BMS/DCIM Integration & Access Control - Data Hall 2 |  | 10d | 2027-04-13 | 2027-04-26 | A4390 FS+10d, A5100, A4400 | 0d | BMS Crew [60 h] | 758,294.97 |
| A5140 |  | L4 Integrated Systems Testing - Section 2 (incl. generator/utility failure-mode demo, shared plant) |  | 10d | 2027-04-27 | 2027-05-11 | A5130, A5110, A5120, A4440 | 0d | Commissioning Team [80 h] | 144,740.06 |
| A5150 |  | L5 24-Hour Load-Bank Test @ 2.5MW - Section 2 |  | 5d | 2027-05-12 | 2027-05-18 | A5140 | 0d | Commissioning Team [40 h] | 177,479.78 |
| A5160 |  | Statutory & Tenant Technical Acceptance - Section 2 (Permit Cond.3.2b: shared infra clearance via Section1's first secti |  | 5d | 2027-05-19 | 2027-05-25 | A5150, A4480 | 0d | Commissioning Team [20 h] | 85,509.36 |
| A5170 |  | MILESTONE: SECTION 2 TAKING OVER (Data Hall 2) | milestone | 0d | 2027-05-26 | 2027-05-26 | A5160 | 0d |  |  |
|  | 06.Section | **Section3** |  |  | 2026-09-01 | 2027-07-01 |  |  |  |  |
| A6000 |  | Bulk Earthworks - Hall3 Zone (till) |  | 10d | 2026-09-01 | 2026-09-14 | A5000 SS+35d | 0d | Earthworks Crew [120 h] | 125,589.03 |
| A6010 |  | Foundations - Data Hall 3 |  | 15d | 2026-09-15 | 2026-10-05 | A6000 | 0d | Concrete Crew [210 h] | 1,047,207.88 |
| A6020 |  | Structural Steel Erection - Data Hall 3 (crew relocates from Hall2) |  | 10d | 2026-10-06 | 2026-10-19 | A5020, A6010 | 0d | Structural Steel Crew [180 h] | 574,855.61 |
| A6030 |  | Precast Panel Installation - Data Hall 3 |  | 10d | 2026-10-20 | 2026-11-02 | A6020, A5030 FS+5d | 0d | Precast Crew [140 h] | 469,624.26 |
| A6040 |  | Metal Deck & Roof - Data Hall 3 |  | 10d | 2026-11-03 | 2026-11-16 | A6030 | 0d | Structural Steel Crew [100 h] | 324,954.07 |
| A6050 |  | Envelope - Cladding, Roofing & Airtightness - Data Hall 3 |  | 20d | 2026-11-17 | 2026-12-14 | A6040 | 0d | Facade Crew [280 h] | 1,737,004.11 |
| A6070 |  | CRAH Units - Hall3 Call-Off & Installation (7nr) |  | 10d | 2026-12-22 | 2027-01-15 | A4290 FS+50d, A6050, A5070 | 0d | Mechanical Crew [80 h] | 594,603.6 |
| A6080 |  | UPS & Battery Installation - Data Hall 3 |  | 15d | 2027-02-12 | 2027-03-04 | A4310 FS+50d, A4320 FS+50d, A6050 | 0d | Electrical Crew [150 h] | 1,117,066.62 |
| A6060 |  | Hall Substation TX-H3 (20/0.4kV, 3.3MVA) Installation |  | 10d | 2027-03-30 | 2027-04-12 | A6050, A5090 | 0d | Electrical Crew [80 h] | 296,997.81 |
| A6090 |  | LV Distribution, Busway & Containment - Data Hall 3 |  | 15d | 2027-04-13 | 2027-05-03 | A6080, A4340 FS+50d, A6060 | 0d | Electrical Crew [150 h] | 1,418,275.42 |
| A6100 |  | Data Hall Floor Finish & Containment - Data Hall 3 |  | 10d | 2027-05-04 | 2027-05-18 | A6090, A5100 | 0d | Fit-Out Crew [100 h] | 349,008.43 |
| A6130 |  | L1-L3 Testing & Component Start-Up - Section 3 |  | 10d | 2027-05-04 | 2027-05-18 | A6090, A6070 | 0d | Commissioning Team [60 h] | 173,386.95 |
| A6110 |  | Fire Detection & Suppression - Data Hall 3 |  | 10d | 2027-05-19 | 2027-06-01 | A4370 FS+50d, A6100, A5110 | 0d | ELV Crew [80 h] | 466,310.92 |
| A6120 |  | BMS/DCIM Integration & Access Control - Data Hall 3 |  | 10d | 2027-05-19 | 2027-06-01 | A4390 FS+40d, A6100, A5120 | 0d | BMS Crew [60 h] | 758,294.97 |
| A6140 |  | L4 Integrated Systems Testing - Section 3 (incl. generator/utility failure-mode demo, shared plant) |  | 10d | 2027-06-02 | 2027-06-15 | A6130, A6110, A6120, A4440 | 0d | Commissioning Team [80 h] | 144,740.06 |
| A6150 |  | L5 24-Hour Load-Bank Test @ 2.5MW - Section 3 |  | 5d | 2027-06-16 | 2027-06-22 | A6140 | 0d | Commissioning Team [40 h] | 177,479.78 |
| A6160 |  | Statutory & Tenant Technical Acceptance - Section 3 (Permit Cond.3.2b: shared infra clearance via Section1's first secti |  | 5d | 2027-06-23 | 2027-06-30 | A6150, A4480 | 0d | Commissioning Team [20 h] | 85,509.36 |
| A6170 |  | MILESTONE: SECTION 3 TAKING OVER (Data Hall 3) | milestone | 0d | 2027-07-01 | 2027-07-01 | A6160 | 0d |  |  |

| ID | WBS | Activity | Type | Duration | Start | Finish | Predecessors | Free float | Resources | Cost |
| --- | --- | --- | --- | --- | --- | --- | --- | --- | --- | --- |
|  | 07.Section | **Section4** |  |  | 2026-06-08 | 2027-10-29 |  |  |  |  |
| A7170 |  | External Works - Roads, Fencing, Stormwater, Utilities Completion |  | 30d | 2026-06-08 | 2026-08-10 | A4410 | 0d | Civil Crew [360 h] | 2,306,726.73 |
| A7180 |  | Fibre Entry Routes - Two Diverse Ducts |  | 15d | 2026-06-23 | 2026-08-03 | A7170 SS+10d | 0d | Civil Crew [90 h] | 317,082.95 |
| A7220 |  | Hard Landscaping, Grading & Tree Replacement (permit condition) |  | 15d | 2026-08-11 | 2026-08-31 | A7170 | 0d | Civil Crew [120 h] | 225,269.45 |
| A7225 |  | Soft Landscaping / Planting - deferred to 2028 growing season (POST-TOC, see BOS flag) | milestone | 0d | 2026-09-01 | 2026-09-01 | A7220 | 0d |  |  |
| A7190 |  | Waste-Heat Recovery Plant - Procurement (30wk) |  | 150d | 2026-09-25 | 2027-04-22 | A2020 FS+20d | 0d | Mechanical Fabricator (offsite) [150 h] | 3,384,947.47 |
| A7000 |  | Blasting Permit & Pre-Condition Survey - Hall 4 Zone |  | 15d | 2027-02-08 | 2027-02-26 | A4030 SS+150d, A2120 | 0d | Civil Crew [60 h] |  |
| A7010 |  | Rock Excavation by Blasting - Data Hall 4 (~2,075 m3) |  | 15d | 2027-03-01 | 2027-03-19 | A7000, A6000 SS+30d | 0d | Blasting Crew [120 h] | 321,350.32 |
| A7020 |  | Foundations - Data Hall 4 (direct-to-rock / rock-socketed) |  | 15d | 2027-03-22 | 2027-04-13 | A7010 | 0d | Piling Crew [180 h] | 1,418,050.49 |
| A7030 |  | Structural Steel Erection - Data Hall 4 (crew relocates from Hall3) |  | 10d | 2027-04-14 | 2027-04-27 | A6020, A7020 | 0d | Structural Steel Crew [180 h] | 574,855.61 |
| A7140 |  | Admin/NOC Block - Foundations & Structure |  | 30d | 2027-04-22 | 2027-06-03 | A4490 | 0d | Concrete Crew [360 h] | 101,028.38 |
| A7200 |  | Waste-Heat Recovery Plant Installation & Pipework to Boundary Chamber |  | 30d | 2027-04-23 | 2027-06-04 | A7190, A4280 | 0d | Mechanical Crew [300 h] | 341,965.28 |
| A7040 |  | Precast Panel Installation - Data Hall 4 |  | 10d | 2027-04-28 | 2027-05-12 | A7030, A6030 FS+5d | 0d | Precast Crew [140 h] | 469,624.26 |
| A7050 |  | Metal Deck & Roof - Data Hall 4 |  | 10d | 2027-05-13 | 2027-05-26 | A7040 | 0d | Structural Steel Crew [100 h] | 413,577.9 |
| A7060 |  | Envelope - Cladding, Roofing & Airtightness - Data Hall 4 |  | 20d | 2027-05-27 | 2027-06-23 | A7050 | 0d | Facade Crew [280 h] | 1,855,759.79 |
| A7150 |  | Admin/NOC Block - Envelope |  | 15d | 2027-06-04 | 2027-06-24 | A7140 | 0d | Facade Crew [120 h] | 500,401.18 |
| A7070 |  | Hall Substation TX-H4 (20/0.4kV, 3.3MVA) Installation |  | 10d | 2027-06-24 | 2027-07-08 | A7060, A6090 | 0d | Electrical Crew [80 h] | 296,997.81 |
| A7080 |  | CRAH Units - Hall4 Call-Off & Installation (7nr) |  | 10d | 2027-06-24 | 2027-07-08 | A4290 FS+80d, A7060, A6070 | 0d | Mechanical Crew [80 h] | 594,603.6 |
| A7090 |  | UPS & Battery Installation - Data Hall 4 |  | 15d | 2027-06-24 | 2027-08-05 | A4310 FS+80d, A4320 FS+80d, A7060 | 0d | Electrical Crew [150 h] | 1,117,066.62 |
| A7160 |  | Admin/NOC Block - Fit-Out (incl. joinery, sanitaryware) |  | 25d | 2027-06-28 | 2027-08-20 | A7150 | 0d | Fit-Out Crew [300 h] | 1,604,532.46 |
| A7210 |  | District Heating 72-Hour Witnessed Delivery Test (heating season Oct-Apr; needs IT load >40%) |  | 5d | 2027-07-02 | 2027-07-08 | A7200, A6170 | 0d | Commissioning Team [20 h] |  |
| A7100 |  | LV Distribution, Busway & Containment - Data Hall 4 |  | 15d | 2027-08-06 | 2027-08-26 | A7090, A4340 FS+80d, A7070 | 0d | Electrical Crew [150 h] | 1,418,275.42 |
| A7110 |  | Data Hall Floor Finish & Containment - Data Hall 4 |  | 10d | 2027-08-27 | 2027-09-09 | A7100, A6100 | 0d | Fit-Out Crew [100 h] | 349,008.43 |
| A7230 |  | L1-L3 Testing & Component Start-Up - Section 4 |  | 10d | 2027-08-27 | 2027-09-09 | A7100, A7080 | 0d | Commissioning Team [60 h] | 173,386.95 |
| A7120 |  | Fire Detection & Suppression - Data Hall 4 |  | 10d | 2027-09-10 | 2027-09-23 | A4370 FS+80d, A7110, A6110 | 0d | ELV Crew [80 h] | 466,310.92 |
| A7130 |  | BMS/DCIM Integration & Access Control - Data Hall 4 |  | 10d | 2027-09-10 | 2027-09-23 | A4390 FS+60d, A7110, A6120 | 0d | BMS Crew [60 h] | 773,817.17 |
| A7240 |  | L4 Integrated Systems Testing - Section 4 (incl. generator/utility failure-mode demo, shared plant) |  | 10d | 2027-09-24 | 2027-10-07 | A7230, A7120, A7130, A4440 | 0d | Commissioning Team [80 h] | 144,740.06 |
| A7250 |  | L5 24-Hour Load-Bank Test @ 2.5MW - Section 4 |  | 5d | 2027-10-08 | 2027-10-14 | A7240 | 0d | Commissioning Team [40 h] | 177,479.78 |
| A7260 |  | Final Occupancy Inspection (whole scope, incl. DH connection demonstration per Permit Cond.23) |  | 10d | 2027-10-15 | 2027-10-28 | A7250, A7160, A7210, A7220, A4480, A7180 | 0d | Commissioning Team [40 h] | 85,509.36 |
| A7270 |  | MILESTONE: SECTION 4 TAKING OVER / COMPLETION OF THE WORKS | milestone | 0d | 2027-10-29 | 2027-10-29 | A7260, A6170 | 0d |  |  |

| ID | WBS | Activity | Type | Duration | Start | Finish | Predecessors | Free float |
| --- | --- | --- | --- | --- | --- | --- | --- | --- |
|  | 09.Interfa | **Interfaces** |  |  | 2027-03-05 | 2027-07-09 |  |  |
| A9000 |  | MILESTONE: Grid Energisation - Stage 2 (Hall 2, DNO earliest 2027-06-30) | milestone | 0d | 2027-03-05 | 2027-03-05 | A5060 | 0d |
| A9010 |  | MILESTONE: Grid Energisation - Stage 3 (Hall 3, DNO earliest 2027-10-31) | milestone | 0d | 2027-04-13 | 2027-04-13 | A6060 | 0d |
| A9020 |  | MILESTONE: Grid Energisation - Stage 4 (Hall 4, DNO earliest 2028-01-31) | milestone | 0d | 2027-07-09 | 2027-07-09 | A7070 | 0d |
