# Polaris DC-1 Baseline

Schedule from Primavera P6, 2025-12-12 to 2027-12-27, data date 2026-09-24, costs in 0.
Must finish by 2028-01-02

## Calendars

- Site Calendar - Finland (28 public holidays + weeks 28-30 shutdown): Mon-Sun as the base calendar. Exceptions (off unless hours are given): 2026-01-01, 2026-01-06, 2026-04-03, 2026-04-06, 2026-05-01, 2026-05-14, 2026-06-19 to 2026-06-20, 2026-07-06 to 2026-07-26, 2026-10-31, 2026-12-06, 2026-12-24 to 2026-12-26, 2027-01-01, 2027-01-06, 2027-03-26, 2027-03-29, 2027-05-01, 2027-05-06, 2027-06-25 to 2027-06-26, 2027-07-12 to 2027-08-01, 2027-11-06, 2027-12-06, 2027-12-24 to 2027-12-26.
- Design/Office Calendar - Finland (public holidays): Mon-Sun as the base calendar. Exceptions (off unless hours are given): 2026-01-01, 2026-01-06, 2026-04-03, 2026-04-06, 2026-05-01, 2026-05-14, 2026-06-19 to 2026-06-20, 2026-10-31, 2026-12-06, 2026-12-24 to 2026-12-26, 2027-01-01, 2027-01-06, 2027-03-26, 2027-03-29, 2027-05-01, 2027-05-06, 2027-06-25 to 2027-06-26, 2027-11-06, 2027-12-06, 2027-12-24 to 2027-12-26.

## Resources

| Resource | Group |
| --- | --- |
| Management & Supervision | labor |
| Earthworks Crew | labor |
| Substructure Crew | labor |
| Procurement | labor |
| Steel & Precast Crew | labor |
| Envelope Crew | labor |
| Fit-out Crew | labor |
| Mechanical Crew | labor |
| Commissioning Team (MEP) | labor |
| Electrical Crew | labor |
| Design Office | labor |
| ELV Crew | labor |
| External Works Crew | labor |

## Schedule

| ID | WBS | Activity | Type | Duration | Start | Finish | Predecessors | Total float | Constraint | Calendar | Resources | Cost |
| --- | --- | --- | --- | --- | --- | --- | --- | --- | --- | --- | --- | --- |
|  | 0 | **0 Base Date / Award** |  |  | 2025-12-12 | 2025-12-12 |  |  |  |  |  |  |
| AW-0000 |  | CONTRACT AWARD / BASE DATE (12 Dec 2025) | milestone | 0d | 2025-12-12 | 2025-12-12 |  | 32d |  | Design/Office Calendar - Finland (public holidays) | Management & Supervision | 8,469.89 |
|  | 1 | **1 Project Management & Preliminaries** |  |  | 2026-03-02 | 2027-12-27 |  |  |  |  |  |  |
| MK-000 |  | PROJECT COMMENCEMENT — Commencement Date (2 Mar 2026) | milestone | 0d | 2026-03-02 | 2026-03-02 | AW-0000 | -3d | start on 2026-03-02 |  | Management & Supervision | 5,081.93 |
| EX-1000 |  | Instruction to proceed |  | 0d | 2026-03-03 | 2026-03-03 | MK-000 | 668d |  | Design/Office Calendar - Finland (public holidays) | Management & Supervision | 5,081.93 |
| GW-1000 |  | Instruction to proceed |  | 0d | 2026-03-03 | 2026-03-03 | MK-000 | 8d |  | Design/Office Calendar - Finland (public holidays) | Management & Supervision | 5,081.93 |
| IL-1000 |  | Instruction to proceed |  | 0d | 2026-03-03 | 2026-03-03 | MK-000 | 91d |  | Design/Office Calendar - Finland (public holidays) | Management & Supervision | 5,081.93 |
| PM-1000 |  | Project, construction & commercial management, QA/QC (LOE) |  | 430d | 2026-03-03 | 2027-12-27 | MK-000 | 6d |  |  | Management & Supervision [2580 h] | 2,185,231.98 |
| VE-1000 |  | Instruction to proceed |  | 0d | 2026-03-03 | 2026-03-03 | MK-000 | -1d |  | Design/Office Calendar - Finland (public holidays) | Management & Supervision | 5,081.93 |
| EX-1010 |  | Temporary site fencing and gate installation |  | 10d | 2026-03-04 | 2026-03-17 | GW-1000 | 335d |  |  | Management & Supervision [60 h] | 50,819.35 |
| GW-1010 |  | Mobilisation, site hoarding and temporary haul road |  | 15d | 2026-03-04 | 2026-03-24 | GW-1000 | 8d |  |  | Management & Supervision [90 h] | 76,229.02 |
| GW-1030 |  | Pre-condition survey and blasting permit discharge |  | 20d | 2026-03-04 | 2026-03-31 | GW-1000 | 560d |  |  | Management & Supervision [120 h] | 101,638.7 |
| IL-1010 |  | Contract award administration and bonds |  | 10d | 2026-03-04 | 2026-03-17 | IL-1000 | 91d |  | Design/Office Calendar - Finland (public holidays) | Management & Supervision [60 h] | 50,819.35 |
| IL-1020 |  | Performance security, guarantees and insurances in place |  | 10d | 2026-03-04 | 2026-03-17 | IL-1000 | 163d |  |  | Management & Supervision [60 h] | 50,819.35 |
| VE-1010 |  | Contract award administration, bonds and securities |  | 10d | 2026-03-04 | 2026-03-17 | VE-1000 | -1d |  | Design/Office Calendar - Finland (public holidays) | Management & Supervision [60 h] | 50,819.35 |
| VE-1400 |  | Site establishment and electrical setting out |  | 10d | 2026-03-18 | 2026-03-31 | VE-1010 | 195d |  |  | Management & Supervision [60 h] | 90,691.97 |
| GW-1020 |  | Site compound base — offices, welfare and parking hardstanding |  | 12d | 2026-03-25 | 2026-04-13 | GW-1010 | 99d |  |  | Management & Supervision [72 h] | 60,983.22 |
| GW-1200 |  | Piling — Hall 1 and Hall 2 |  | 25d | 2026-05-26 | 2026-06-30 | GW-1100 | 8d |  |  | Management & Supervision [300 h] | 370,588.24 |
| GW-1210 |  | Piling — Hall 3 and Hall 4 |  | 25d | 2026-06-01 | 2026-07-27 | GW-1030, GW-1200 SS+5d | 541d |  |  | Management & Supervision [300 h] | 370,588.24 |
| GW-1220 |  | Piling — substation, switchgear and generator compound |  | 18d | 2026-06-01 | 2026-06-25 | GW-1200 SS+5d | 252d |  |  | Management & Supervision [216 h] | 266,823.53 |
|  | 2 | **2 Design & Technical Submissions** |  |  | 2026-03-03 | 2026-07-08 |  |  |  |  |  |  |
| DE-2000 |  | Stage 1 (concept) design submission & Engineer review (14 d) |  | 14d | 2026-03-03 | 2026-03-20 | MK-000 | 598d |  | Design/Office Calendar - Finland (public holidays) | Design Office [70 h] | 59,289.24 |
| EL-1000 |  | Instruction to proceed |  | 0d | 2026-03-03 | 2026-03-03 | MK-000 | 609d |  | Design/Office Calendar - Finland (public holidays) | Design Office | 4,234.95 |
| EL-1010 |  | Design development — BMS/DCIM, fire detection and suppression |  | 40d | 2026-03-04 | 2026-04-30 | EL-1000 | 609d |  | Design/Office Calendar - Finland (public holidays) | Design Office [200 h] | 169,397.83 |
| DE-2100 |  | Stage 2 detailed design submission & Engineer review (21 d) |  | 21d | 2026-03-23 | 2026-04-22 | DE-2000 | 598d |  | Design/Office Calendar - Finland (public holidays) | Design Office [105 h] | 88,933.86 |
| DE-2200 |  | Stage 3 construction-issue design & Engineer review (14 d) |  | 14d | 2026-04-23 | 2026-05-13 | DE-2100 | 599d |  | Design/Office Calendar - Finland (public holidays) | Design Office [70 h] | 59,289.24 |
| AV-1000 |  | Crane aviation-clearance approvals (21 d per crane location) |  | 21d | 2026-06-09 | 2026-07-08 | ST-1020 | 71d |  | Design/Office Calendar - Finland (public holidays) | Design Office [105 h] | 88,933.86 |

| ID | WBS | Activity | Type | Duration | Start | Finish | Predecessors | Total float | Constraint | Calendar | Resources | Cost |
| --- | --- | --- | --- | --- | --- | --- | --- | --- | --- | --- | --- | --- |
|  | 3 | **3 Procurement & Long-Lead Manufacture** |  |  | 2026-01-16 | 2027-02-01 |  |  |  |  |  |  |
| AP-1000 |  | Advance purchase instruction — long-lead electrical plant | milestone | 0d | 2026-01-16 | 2026-01-16 | AW-0000 | -2d | start on 2026-01-16 |  | Procurement | 2,540.97 |
| VE-1200 |  | 110/20 kV transformers (2 nr) — order and manufacture |  | 250d | 2026-01-19 | 2027-01-01 | AP-1000 | -4d |  | Procurement/Manufacture calendar (7-day elapsed) | Procurement | 1,133,649.6 |
| ST-1000 |  | Instruction to proceed |  | 0d | 2026-03-03 | 2026-03-03 | MK-000 | 1d |  | Design/Office Calendar - Finland (public holidays) | Procurement | 2,540.97 |
| ST-1010 |  | Design development — steel frame and precast connections |  | 35d | 2026-03-04 | 2026-04-23 | ST-1000 | 1d |  | Design/Office Calendar - Finland (public holidays) | Procurement [560 h] | 474,313.92 |
| VE-1100 |  | Design development — HV/MV distribution |  | 30d | 2026-03-18 | 2026-04-30 | VE-1010 | -1d |  | Design/Office Calendar - Finland (public holidays) | Procurement [150 h] | 226,729.92 |
| VE-1110 |  | Design development — LV, busway and containment |  | 25d | 2026-03-18 | 2026-04-23 | VE-1010 | 126d |  | Design/Office Calendar - Finland (public holidays) | Procurement [500 h] | 755,766.4 |
| VE-1120 |  | Design development — generators, UPS and battery systems |  | 25d | 2026-03-18 | 2026-04-23 | VE-1010 | 600d |  | Design/Office Calendar - Finland (public holidays) | Procurement [125 h] | 188,941.6 |
| VE-1240 |  | Standby generators (8 nr) — order and manufacture |  | 200d | 2026-03-18 | 2026-12-22 | VE-1010 | 19d |  | Procurement/Manufacture calendar (7-day elapsed) | Procurement | 906,919.68 |
| VE-1260 |  | UPS modules (16 nr) — order and manufacture |  | 150d | 2026-03-18 | 2026-10-13 | VE-1010 | 93d |  | Procurement/Manufacture calendar (7-day elapsed) | Procurement | 680,189.76 |
| VE-1280 |  | Battery systems — order and manufacture |  | 120d | 2026-03-18 | 2026-09-01 | VE-1010 | 139d |  | Procurement/Manufacture calendar (7-day elapsed) | Procurement | 544,151.81 |
| ST-1020 |  | Fabrication drawings and approval |  | 30d | 2026-04-24 | 2026-06-08 | ST-1010 | 3d |  | Design/Office Calendar - Finland (public holidays) | Procurement [150 h] | 127,048.37 |
| ST-1120 |  | Precast wall and floor unit manufacture |  | 60d | 2026-04-24 | 2026-07-16 | ST-1010 | 532d |  | Procurement/Manufacture calendar (7-day elapsed) | Procurement [960 h] | 1,137,537.8 |
| VE-1300 |  | Overhead busway — order and manufacture |  | 100d | 2026-04-24 | 2026-09-10 | VE-1110 | 124d |  | Procurement/Manufacture calendar (7-day elapsed) | Procurement | 453,459.84 |
| VE-1220 |  | 20 kV ring main switchgear — order and manufacture |  | 190d | 2026-05-01 | 2027-01-21 | VE-1100 | -1d |  | Procurement/Manufacture calendar (7-day elapsed) | Procurement | 861,573.7 |
| VE-1130 |  | Contractor and Engineer design review |  | 12d | 2026-05-04 | 2026-05-20 | VE-1100, VE-1110, VE-1120 | 589d |  | Design/Office Calendar - Finland (public holidays) | Procurement [60 h] | 90,691.97 |
| IL-1200 |  | Chillers — order and manufacture |  | 130d | 2026-05-19 | 2026-11-16 | IL-1130 | 86d |  | Procurement/Manufacture calendar (7-day elapsed) | Procurement [1560 h] | 1,951,297.87 |
| IL-1220 |  | Dry coolers / adiabatic units — order and manufacture |  | 110d | 2026-05-19 | 2026-10-19 | IL-1130 | 90d |  | Procurement/Manufacture calendar (7-day elapsed) | Procurement [1320 h] | 1,651,098.2 |
| IL-1240 |  | CRAH units (28 nr) — order and manufacture |  | 110d | 2026-05-19 | 2026-10-19 | IL-1130 | 113d |  | Procurement/Manufacture calendar (7-day elapsed) | Procurement [1320 h] | 1,651,098.2 |
| IL-1260 |  | Waste-heat recovery plant — order and manufacture |  | 150d | 2026-05-19 | 2026-12-14 | IL-1130 | 294d |  | Procurement/Manufacture calendar (7-day elapsed) | Procurement [1800 h] | 2,251,497.55 |
| ST-1100 |  | Structural steel fabrication — Halls 1-2 |  | 55d | 2026-06-09 | 2026-09-15 | ST-1020 | 1d |  |  | Procurement [1100 h] | 1,303,428.73 |
| ST-1110 |  | Structural steel fabrication — Halls 3-4 |  | 55d | 2026-06-09 | 2026-09-15 | ST-1020 | 461d |  |  | Procurement [1100 h] | 1,303,428.73 |
| VE-1290 |  | Battery systems — delivery to site |  | 5d | 2026-09-02 | 2026-09-08 | VE-1280 | 139d |  | Procurement/Manufacture calendar (7-day elapsed) | Procurement | 22,672.99 |
| VE-1310 |  | Busway — delivery to site |  | 7d | 2026-09-11 | 2026-09-21 | VE-1300 | 124d |  | Procurement/Manufacture calendar (7-day elapsed) | Procurement | 31,742.19 |
| VE-1270 |  | UPS — delivery to site |  | 7d | 2026-10-14 | 2026-10-22 | VE-1260 | 93d |  | Procurement/Manufacture calendar (7-day elapsed) | Procurement | 31,742.19 |
| IL-1230 |  | Dry coolers — delivery to site |  | 7d | 2026-10-20 | 2026-10-28 | IL-1220 | 90d |  | Procurement/Manufacture calendar (7-day elapsed) | Procurement [84 h] | 105,069.89 |
| IL-1250 |  | CRAH units — delivery to site |  | 10d | 2026-10-20 | 2026-11-02 | IL-1240 | 113d |  | Procurement/Manufacture calendar (7-day elapsed) | Procurement [120 h] | 150,099.84 |
| IL-1210 |  | Chillers — delivery to site |  | 7d | 2026-11-17 | 2026-11-25 | IL-1200 | 86d |  | Procurement/Manufacture calendar (7-day elapsed) | Procurement [84 h] | 105,069.89 |
| IL-1270 |  | Waste-heat recovery plant — delivery |  | 7d | 2026-12-15 | 2026-12-23 | IL-1260 | 294d |  | Procurement/Manufacture calendar (7-day elapsed) | Procurement [84 h] | 105,069.89 |
| VE-1250 |  | Generators — delivery to site |  | 10d | 2026-12-23 | 2027-01-05 | VE-1240 | 19d |  | Procurement/Manufacture calendar (7-day elapsed) | Procurement | 45,345.98 |
| VE-1210 |  | Transformers — delivery to site |  | 10d | 2027-01-04 | 2027-01-15 | VE-1200 | -4d |  | Procurement/Manufacture calendar (7-day elapsed) | Procurement | 45,345.98 |
| VE-1230 |  | Switchgear — delivery to site |  | 7d | 2027-01-22 | 2027-02-01 | VE-1220 | -1d |  | Procurement/Manufacture calendar (7-day elapsed) | Procurement | 31,742.19 |

| ID | WBS | Activity | Duration | Start | Finish | Predecessors | Total float | Resources | Cost |
| --- | --- | --- | --- | --- | --- | --- | --- | --- | --- |
|  | 4 | **4 Enabling Works & Earthworks** |  | 2026-03-25 | 2026-10-23 |  |  |  |  |
| GW-1100 |  | Topsoil strip and bulk earthworks — western two-thirds | 40d | 2026-03-25 | 2026-05-25 | GW-1010 | 8d | Earthworks Crew [640 h] | 790,588.24 |
| GW-1110 |  | Rock excavation and blasting — eastern third | 55d | 2026-04-01 | 2026-06-23 | GW-1030 | 560d | Earthworks Crew [880 h] | 1,087,058.82 |
| GW-1120 |  | Made-ground remediation — north-west corner | 15d | 2026-05-26 | 2026-06-15 | GW-1100 | 330d | Earthworks Crew [240 h] | 296,470.59 |
| GW-1500 |  | External drainage and below-ground services | 30d | 2026-09-14 | 2026-10-23 | GW-1400, GW-1410 | 423d | Earthworks Crew [480 h] | 592,941.18 |
|  | 5 | **5 Substructure & Foundations** |  | 2026-04-14 | 2026-10-30 |  |  |  |  |
| GW-1320 |  | Substructure — shared MEP spine | 25d | 2026-04-14 | 2026-05-20 | GW-1020 | 118d | Substructure Crew [500 h] | 617,647.06 |
| ST-1300 |  | Precast erection — shared MEP spine and mezzanine | 30d | 2026-05-21 | 2026-07-02 | GW-1320 | 271d | Substructure Crew [480 h] | 568,768.9 |
| GW-1420 |  | Substructure — generator compound and fuel storage bunds | 20d | 2026-06-26 | 2026-08-13 | GW-1220 | 292d | Substructure Crew [400 h] | 494,117.65 |
| ST-1310 |  | Precast erection — substation and switchgear building | 18d | 2026-06-26 | 2026-08-11 | GW-1220 | 251d | Substructure Crew [288 h] | 341,261.34 |
| GW-1300 |  | Pile caps and ground beams — Halls 1-2 | 15d | 2026-07-01 | 2026-08-11 | GW-1200 | 29d | Substructure Crew [180 h] | 222,352.94 |
| GW-1310 |  | Pile caps and ground beams — Halls 3-4 | 15d | 2026-07-27 | 2026-08-14 | GW-1300 SS+5d | 500d | Substructure Crew [180 h] | 222,352.94 |
| GW-1400 |  | Ground-bearing slab — Halls 1-2 | 20d | 2026-08-12 | 2026-09-08 | GW-1300 | 8d | Substructure Crew [400 h] | 494,117.65 |
| GW-1410 |  | Ground-bearing slab — Halls 3-4 | 20d | 2026-08-17 | 2026-09-11 | GW-1400 SS+5d | 240d | Substructure Crew [400 h] | 494,117.65 |
| GW-1900 |  | Substructure complete — handover to TP-002 | 0d | 2026-09-14 | 2026-09-14 | GW-1400, GW-1410, GW-1420, GW-1120 | 241d | Substructure Crew | 24,705.88 |
| GW-1950 |  | Demobilise bulk earthworks plant | 5d | 2026-10-26 | 2026-10-30 | GW-1500 | 427d | Substructure Crew [100 h] | 123,529.41 |
|  | 6 | **6 Superstructure & Decking** |  | 2026-09-16 | 2027-02-25 |  |  |  |  |
| ST-1200 |  | Steel erection — Hall 1 | 22d | 2026-09-16 | 2026-10-15 | GW-1400, ST-1100, AV-1000 | 1d | Steel & Precast Crew [440 h] | 521,371.49 |
| ST-1210 |  | Steel erection — Hall 2 | 22d | 2026-09-28 | 2026-10-27 | ST-1200 SS+10d | 9d | Steel & Precast Crew [440 h] | 521,371.49 |
| ST-1220 |  | Steel erection — Hall 3 | 22d | 2026-09-28 | 2026-10-27 | ST-1200 SS+10d, GW-1410, ST-1110 | 427d | Steel & Precast Crew [440 h] | 521,371.49 |
| ST-1230 |  | Steel erection — Hall 4 | 22d | 2026-10-08 | 2026-11-06 | ST-1210 SS+10d | 417d | Steel & Precast Crew [440 h] | 521,371.49 |
| ST-1400 |  | Metal decking and structural topping — Halls 1-2 | 20d | 2026-10-28 | 2026-11-24 | ST-1200, ST-1210 | 9d | Steel & Precast Crew [240 h] | 284,384.45 |
| ST-1410 |  | Metal decking and structural topping — Halls 3-4 | 20d | 2026-11-02 | 2026-11-27 | ST-1400 SS+5d | 17d | Steel & Precast Crew [240 h] | 284,384.45 |
| ST-1500 |  | Roof steelwork and plant support frames | 25d | 2026-11-30 | 2027-01-07 | ST-1400, ST-1410 | 17d | Steel & Precast Crew [500 h] | 592,467.6 |
| ST-1600 |  | Fire protection to structural steel | 30d | 2027-01-08 | 2027-02-18 | ST-1400, ST-1410, ST-1300, ST-1310, ST-1500 | 83d | Steel & Precast Crew [600 h] | 710,961.12 |
| ST-1900 |  | Structure complete — Halls 1-2 | 0d | 2027-01-08 | 2027-01-08 | ST-1400, ST-1500 | 356d | Steel & Precast Crew | 23,698.7 |
| ST-1910 |  | Structure complete — Halls 3-4 | 0d | 2027-01-08 | 2027-01-08 | ST-1410, ST-1500 | 356d | Steel & Precast Crew | 23,698.7 |
| ST-1950 |  | Crane demobilisation | 5d | 2027-02-19 | 2027-02-25 | ST-1600 | 307d | Steel & Precast Crew [100 h] | 118,493.52 |

| ID | WBS | Activity | Duration | Start | Finish | Predecessors | Total float | Calendar | Resources | Cost |
| --- | --- | --- | --- | --- | --- | --- | --- | --- | --- | --- |
|  | 7 | **7 Envelope** |  | 2026-03-03 | 2027-03-12 |  |  |  |  |  |
| EN-1000 |  | Instruction to proceed | 0d | 2026-03-03 | 2026-03-03 | MK-000 | 140d | Design/Office Calendar - Finland (public holidays) | Envelope Crew | 15,245.8 |
| EN-1010 |  | Design development — cladding, acoustic and fire-rated build-ups | 30d | 2026-03-04 | 2026-04-16 | EN-1000 | 140d | Design/Office Calendar - Finland (public holidays) | Envelope Crew [720 h] | 609,832.18 |
| EN-1020 |  | Cladding fabrication and delivery to site | 55d | 2026-04-17 | 2026-07-02 | EN-1010 | 138d | Procurement/Manufacture calendar (7-day elapsed) | Envelope Crew [1320 h] | 1,118,025.67 |
| EN-1100 |  | Roofing — Halls 1-2 | 30d | 2026-10-28 | 2026-12-08 | ST-1400 SS, EN-1020 | 21d |  | Envelope Crew [360 h] | 584,604.57 |
| EN-1110 |  | Roofing — Halls 3-4 | 30d | 2026-11-02 | 2026-12-11 | ST-1410 SS, EN-1020 | 70d |  | Envelope Crew [360 h] | 584,604.57 |
| EN-1200 |  | Wall cladding — Halls 1-2 | 30d | 2026-11-02 | 2026-12-11 | EN-1100 SS+5d | 37d |  | Envelope Crew [720 h] | 1,169,209.14 |
| EN-1210 |  | Wall cladding — Halls 3-4 | 30d | 2026-11-09 | 2026-12-18 | EN-1110 SS+5d | 79d |  | Envelope Crew [720 h] | 1,169,209.14 |
| EN-1500 |  | WEATHERTIGHT — Halls 1-2 | 0d | 2026-12-14 | 2026-12-14 | EN-1200 | 43d |  | Envelope Crew | 29,230.23 |
| EN-1300 |  | Louvres, doors and external openings | 30d | 2026-12-21 | 2027-02-04 | EN-1210 | 302d |  | Envelope Crew [540 h] | 876,906.85 |
| EN-1510 |  | WEATHERTIGHT — Halls 3-4 | 0d | 2026-12-21 | 2026-12-21 | EN-1210 | 79d |  | Envelope Crew | 29,230.23 |
| EN-1400 |  | Roof plant screens and walkways | 25d | 2027-01-08 | 2027-02-11 | ST-1500 | 291d |  | Envelope Crew [300 h] | 487,170.47 |
| EN-1600 |  | Envelope snagging and sealant inspection | 20d | 2027-02-12 | 2027-03-11 | EN-1300, EN-1400 | 291d |  | Envelope Crew [360 h] | 584,604.57 |
| EN-1900 |  | Envelope complete | 0d | 2027-03-12 | 2027-03-12 | EN-1600 | 293d |  | Envelope Crew | 29,230.23 |
|  | 8 | **8 Internal Fit-out & White Space** |  | 2026-03-03 | 2027-06-29 |  |  |  |  |  |
| FI-1000 |  | Instruction to proceed | 0d | 2026-03-03 | 2026-03-03 | MK-000 | 623d | Design/Office Calendar - Finland (public holidays) | Fit-out Crew | 16,939.78 |
| FI-1010 |  | Design development — white-space containment and finishes | 30d | 2026-03-04 | 2026-04-16 | FI-1000 | 623d | Design/Office Calendar - Finland (public holidays) | Fit-out Crew [600 h] | 508,193.48 |
| FI-1101 |  | Internal blockwork and partitions — Hall 1 | 15d | 2026-12-15 | 2027-01-08 | EN-1500 | 43d |  | Fit-out Crew [300 h] | 231,772.58 |
| FI-1400 |  | Administration and NOC block fit-out | 40d | 2026-12-15 | 2027-02-12 | EN-1500 | 322d |  | Fit-out Crew [800 h] | 618,060.2 |
| FI-1110 |  | Internal blockwork and partitions — Halls 3-4 | 30d | 2026-12-22 | 2027-02-05 | EN-1510 | 79d |  | Fit-out Crew [600 h] | 463,545.15 |
| FI-1102 |  | Internal blockwork and partitions — Hall 2 | 15d | 2027-01-11 | 2027-01-29 | FI-1101 | 79d |  | Fit-out Crew [300 h] | 231,772.58 |
| FI-1200 |  | Raised access floor — Hall 1 | 20d | 2027-01-11 | 2027-02-05 | FI-1101 | 37d |  | Fit-out Crew [400 h] | 309,030.1 |
| FI-1210 |  | Raised access floor — Hall 2 | 20d | 2027-02-01 | 2027-02-26 | FI-1102 | 79d |  | Fit-out Crew [400 h] | 309,030.1 |
| FI-1220 |  | Raised access floor — Hall 3 | 20d | 2027-02-08 | 2027-03-05 | FI-1110 | 77d |  | Fit-out Crew [400 h] | 309,030.1 |
| FI-1301 |  | Hot/cold aisle containment — Hall 1 | 13d | 2027-02-08 | 2027-02-24 | FI-1200 | 37d |  | Fit-out Crew [260 h] | 200,869.57 |
| FI-1501 |  | Painting, sealing and final finishes — Hall 1 | 10d | 2027-02-25 | 2027-03-10 | FI-1301 | 41d |  | Fit-out Crew [200 h] | 154,515.05 |
| FI-1302 |  | Hot/cold aisle containment — Hall 2 | 13d | 2027-03-01 | 2027-03-17 | FI-1210 | 80d |  | Fit-out Crew [260 h] | 200,869.57 |
| FI-1230 |  | Raised access floor — Hall 4 | 20d | 2027-03-08 | 2027-04-06 | FI-1220 | 78d |  | Fit-out Crew [400 h] | 309,030.1 |
| FI-1601 |  | White-space cleaning (data-centre standard) — Hall 1 | 7d | 2027-03-11 | 2027-03-19 | FI-1501 | 41d |  | Fit-out Crew [140 h] | 108,160.54 |
| FI-1502 |  | Painting, sealing and final finishes — Hall 2 | 10d | 2027-03-18 | 2027-04-02 | FI-1302 | 82d |  | Fit-out Crew [200 h] | 154,515.05 |
| FI-1900 |  | Finishes complete — Section 1 | 0d | 2027-03-22 | 2027-03-22 | FI-1601 | 283d |  | Fit-out Crew | 15,451.51 |
| FI-1602 |  | White-space cleaning (data-centre standard) — Hall 2 | 7d | 2027-04-05 | 2027-04-13 | FI-1502 | 78d |  | Fit-out Crew [140 h] | 108,160.54 |
| FI-1310 |  | Hot/cold aisle containment — Halls 3-4 | 25d | 2027-04-07 | 2027-05-12 | FI-1220, FI-1230 | 76d |  | Fit-out Crew [500 h] | 386,287.63 |
| FI-1510 |  | Painting, sealing and final finishes — Halls 3-4 | 20d | 2027-05-13 | 2027-06-09 | FI-1310 | 97d |  | Fit-out Crew [400 h] | 309,030.1 |
| FI-1610 |  | White-space cleaning to data-centre standard — Halls 3-4 | 12d | 2027-06-10 | 2027-06-28 | FI-1510 | 97d |  | Fit-out Crew [240 h] | 185,418.06 |
| FI-1910 |  | Finishes complete — Sections 3-4 | 0d | 2027-06-29 | 2027-06-29 | FI-1610 | 184d |  | Fit-out Crew | 15,451.51 |

| ID | WBS | Activity | Type | Duration | Start | Finish | Predecessors | Total float | Constraint | Calendar | Resources | Cost |
| --- | --- | --- | --- | --- | --- | --- | --- | --- | --- | --- | --- | --- |
|  | 9 | **9 Mechanical Services** |  |  | 2026-03-18 | 2027-10-08 |  |  |  |  |  |  |
| IL-1100 |  | Design development — chilled water system |  | 28d | 2026-03-18 | 2026-04-28 | IL-1010 | 91d |  | Design/Office Calendar - Finland (public holidays) | Mechanical Crew [140 h] | 175,116.48 |
| IL-1110 |  | Design development — heat recovery plant |  | 24d | 2026-03-18 | 2026-04-22 | IL-1010 | 98d |  | Design/Office Calendar - Finland (public holidays) | Mechanical Crew [288 h] | 360,239.61 |
| IL-1120 |  | Design development — ventilation and smoke extract |  | 22d | 2026-03-18 | 2026-04-20 | IL-1010 | 100d |  | Design/Office Calendar - Finland (public holidays) | Mechanical Crew [110 h] | 137,591.52 |
| IL-1125 |  | Design development — water treatment and adiabatic make-up |  | 15d | 2026-03-18 | 2026-04-09 | IL-1010 | 111d |  | Design/Office Calendar - Finland (public holidays) | Mechanical Crew [75 h] | 93,812.4 |
| IL-1300 |  | Site establishment and mechanical setting out |  | 10d | 2026-03-18 | 2026-03-31 | IL-1000, IL-1020 | 163d |  |  | Mechanical Crew [220 h] | 275,183.03 |
| IL-1311 |  | Plantroom access — Data Hall 1 |  | 0d | 2026-04-01 | 2026-04-01 | IL-1300 | 163d |  |  | Mechanical Crew | 27,518.3 |
| IL-1312 |  | Plantroom access — Data Hall 2 |  | 0d | 2026-04-01 | 2026-04-01 | IL-1300 | 329d |  |  | Mechanical Crew | 27,518.3 |
| IL-1313 |  | Plantroom access — Data Hall 3 |  | 0d | 2026-04-01 | 2026-04-01 | IL-1300 | 404d |  |  | Mechanical Crew | 27,518.3 |
| IL-1314 |  | Plantroom access — Data Hall 4 |  | 0d | 2026-04-01 | 2026-04-01 | IL-1300 | 492d |  |  | Mechanical Crew | 27,518.3 |
| IL-1130 |  | Contractor and Engineer design review |  | 12d | 2026-04-29 | 2026-05-18 | IL-1100, IL-1110, IL-1120, IL-1125 | 90d |  | Design/Office Calendar - Finland (public holidays) | Mechanical Crew [60 h] | 75,049.92 |
| IL-1400 |  | Chilled water pipework — primary spine |  | 70d | 2026-05-21 | 2026-09-17 | IL-1311, GW-1320 | 116d |  |  | Mechanical Crew [1540 h] | 1,926,281.23 |
| IL-1410 |  | Chilled water pipework — Hall 1 secondary |  | 30d | 2026-06-30 | 2026-08-31 | IL-1400 SS+40d | 143d |  |  | Mechanical Crew [660 h] | 825,549.1 |
| IL-1500 |  | Pumps, buffer vessels and glycol dosing |  | 25d | 2026-09-01 | 2026-10-05 | IL-1410 | 128d |  |  | Mechanical Crew [550 h] | 687,957.58 |
| IL-1420 |  | Chilled water pipework — Hall 2 secondary |  | 30d | 2026-09-18 | 2026-10-29 | IL-1400, IL-1312 | 160d |  |  | Mechanical Crew [660 h] | 825,549.1 |
| IL-1430 |  | Chilled water pipework — Hall 3 secondary |  | 30d | 2026-09-18 | 2026-10-29 | IL-1400, IL-1313 | 235d |  |  | Mechanical Crew [660 h] | 825,549.1 |
| IL-1440 |  | Chilled water pipework — Hall 4 secondary |  | 30d | 2026-09-18 | 2026-10-29 | IL-1400, IL-1314 | 325d |  |  | Mechanical Crew [660 h] | 825,549.1 |
| IL-1605 |  | CHW system flushing — spine and secondary loops |  | 12d | 2026-10-06 | 2026-10-21 | IL-1500 | 128d |  |  | Mechanical Crew [264 h] | 330,219.64 |
| IL-1610 |  | Water treatment and adiabatic make-up |  | 15d | 2026-10-22 | 2026-11-11 | IL-1605 | 130d |  |  | Mechanical Crew [330 h] | 412,774.55 |
| IL-1510 |  | Chiller installation and pipework connection |  | 20d | 2026-11-26 | 2026-12-23 | IL-1210, IL-1400 | 88d |  |  | Mechanical Crew [240 h] | 300,199.67 |
| IL-1600 |  | Ventilation and smoke extract to ancillary areas |  | 35d | 2026-12-07 | 2027-01-28 | IL-1510 SS+10d | 329d |  |  | Mechanical Crew [770 h] | 963,140.62 |
| IL-1531 |  | CRAH installation — Hall 1 (7 nr) |  | 18d | 2026-12-15 | 2027-01-13 | IL-1250, IL-1410, EN-1500 | 71d |  |  | Mechanical Crew [216 h] | 270,179.71 |
| IL-1532 |  | CRAH installation — Hall 2 (7 nr) |  | 18d | 2026-12-28 | 2027-01-22 | IL-1250, IL-1420, IL-1531 SS+10d | 105d |  |  | Mechanical Crew [216 h] | 270,179.71 |
| IL-1540 |  | Waste-heat recovery plant installation |  | 30d | 2026-12-28 | 2027-02-09 | IL-1270 | 290d |  |  | Mechanical Crew [360 h] | 450,299.51 |
| IL-1533 |  | CRAH installation — Hall 3 (7 nr) |  | 18d | 2027-01-07 | 2027-02-01 | IL-1250, IL-1430, IL-1532 SS+10d | 166d |  |  | Mechanical Crew [216 h] | 270,179.71 |
| IL-1520 |  | Dry cooler installation — external roof plant |  | 60d | 2027-01-08 | 2027-04-05 | IL-1230, ST-1500 | 19d |  |  | Mechanical Crew [720 h] | 900,599.02 |
| IL-1534 |  | CRAH installation — Hall 4 (7 nr) |  | 18d | 2027-01-18 | 2027-02-10 | IL-1250, IL-1440, IL-1533 SS+10d | 245d |  |  | Mechanical Crew [216 h] | 270,179.71 |
| IL-1550 |  | Waste-heat connection to boundary chamber |  | 12d | 2027-02-10 | 2027-02-25 | IL-1540 | 288d |  |  | Mechanical Crew [264 h] | 330,219.64 |
| DH-1010 |  | District-heating network available at boundary (offtaker) | milestone | 0d | 2027-08-31 | 2027-08-31 | AW-0000 | 104d | start on 2027-08-31 |  | Mechanical Crew | 27,518.3 |
| SEA-1000 |  | Heating season open — waste-heat witnessed-test window | milestone | 0d | 2027-10-01 | 2027-10-01 | AW-0000 | 73d | start on 2027-10-01 |  | Commissioning Team (MEP) | 15,009.98 |
| IL-1560 |  | Waste-heat 72-hour witnessed delivery test (4 MW at 70 C) |  | 5d | 2027-10-04 | 2027-10-08 | IL-1550, DH-1010, SEA-1000 | 71d |  | Procurement/Manufacture calendar (7-day elapsed) | Commissioning Team (MEP) [60 h] | 75,049.92 |

| ID | WBS | Activity | Type | Duration | Start | Finish | Predecessors | Total float | Constraint | Calendar | Resources | Cost |
| --- | --- | --- | --- | --- | --- | --- | --- | --- | --- | --- | --- | --- |
|  | 10 | **10 Electrical Services** |  |  | 2026-04-01 | 2027-06-08 |  |  |  |  |  |  |
| VE-1500 |  | 110 kV termination, metering and protection to DNO interface |  | 45d | 2026-04-01 | 2026-06-08 | VE-1400 | 219d |  |  | Electrical Crew [990 h] | 1,496,417.47 |
| VE-1600 |  | Hall substation 20/0.4 kV — Hall 1 |  | 25d | 2026-04-01 | 2026-05-08 | VE-1400 | 257d |  |  | Electrical Crew [550 h] | 831,343.04 |
| VE-1620 |  | Containment and small power — shared MEP spine |  | 40d | 2026-04-01 | 2026-06-01 | VE-1400 | 195d |  |  | Electrical Crew [800 h] | 1,209,226.24 |
| VE-1601 |  | Hall substation 20/0.4 kV — Hall 2 |  | 25d | 2026-04-16 | 2026-05-22 | VE-1600 SS+15d | 302d |  |  | Electrical Crew [550 h] | 831,343.04 |
| DNO-1000 |  | 110 kV protection study — submission & DNO approval (20 wd) |  | 20d | 2026-05-04 | 2026-06-01 | VE-1100 | 276d |  | Design/Office Calendar - Finland (public holidays) | Electrical Crew [100 h] | 151,153.28 |
| VE-1602 |  | Hall substation 20/0.4 kV — Hall 3 |  | 25d | 2026-05-04 | 2026-06-08 | VE-1601 SS+15d | 358d |  |  | Electrical Crew [550 h] | 831,343.04 |
| VE-1603 |  | Hall substation 20/0.4 kV — Hall 4 |  | 25d | 2026-05-19 | 2026-06-23 | VE-1602 SS+15d | 444d |  |  | Electrical Crew [550 h] | 831,343.04 |
| VE-1610 |  | Overhead busway and containment — Hall 1 |  | 30d | 2026-09-22 | 2026-11-02 | VE-1310, VE-1600 | 122d |  |  | Electrical Crew [600 h] | 906,919.68 |
| VE-1611 |  | Overhead busway and containment — Hall 2 |  | 30d | 2026-09-22 | 2026-11-02 | VE-1310, VE-1601 | 178d |  |  | Electrical Crew [600 h] | 906,919.68 |
| VE-1612 |  | Overhead busway and containment — Hall 3 |  | 30d | 2026-09-22 | 2026-11-02 | VE-1310, VE-1602 | 253d |  |  | Electrical Crew [600 h] | 906,919.68 |
| VE-1613 |  | Overhead busway and containment — Hall 4 |  | 30d | 2026-09-22 | 2026-11-02 | VE-1310, VE-1603 | 353d |  |  | Electrical Crew [600 h] | 906,919.68 |
| VE-1550 |  | UPS and battery system installation |  | 40d | 2026-10-23 | 2026-12-17 | VE-1270, VE-1290 | 95d |  |  | Electrical Crew [880 h] | 1,330,148.86 |
| VE-1530 |  | Standby generator installation (8 nr) and paralleling |  | 55d | 2027-01-07 | 2027-03-24 | VE-1250 | 18d |  |  | Electrical Crew [1210 h] | 1,828,954.69 |
| VE-1510 |  | Transformer installation and HV terminations |  | 35d | 2027-01-18 | 2027-03-05 | VE-1210, VE-1500 | -4d |  |  | Electrical Crew [770 h] | 1,163,880.26 |
| VE-1540 |  | Fuel storage, bunding and 48-hour fuel system |  | 30d | 2027-01-27 | 2027-03-09 | VE-1530 SS+20d | 42d |  |  | Electrical Crew [660 h] | 997,611.65 |
| VE-1520 |  | 20 kV ring main switchboard installation |  | 30d | 2027-02-02 | 2027-03-15 | VE-1230 | -1d |  |  | Electrical Crew [660 h] | 997,611.65 |
| VE-1700 |  | Earthing, bonding, lightning protection and metering |  | 50d | 2027-03-08 | 2027-05-19 | VE-1510 | 217d |  |  | Electrical Crew [1100 h] | 1,662,686.08 |
| GRID-1000 |  | 110 kV GRID ENERGISATION (Vantaan Energia) — earliest availability | milestone | 0d | 2027-03-12 | 2027-03-12 | VE-1510, DNO-1000 | -8d | start on 2027-03-12 |  | Electrical Crew | 33,253.72 |
| VE-1800 |  | Hall 1 substation energisation and LV distribution live |  | 15d | 2027-03-12 | 2027-04-05 | VE-1600, VE-1610, VE-1510, GRID-1000 SS | -7d |  |  | Electrical Crew [330 h] | 498,805.82 |
| VE-1801 |  | Hall 2 substation energisation and LV distribution live |  | 15d | 2027-04-06 | 2027-04-26 | VE-1601, VE-1611, VE-1800 | 28d |  |  | Electrical Crew [330 h] | 498,805.82 |
| VE-1802 |  | Hall 3 substation energisation and LV distribution live |  | 15d | 2027-04-27 | 2027-05-18 | VE-1602, VE-1612, VE-1801 | 100d |  |  | Electrical Crew [330 h] | 498,805.82 |
| VE-1803 |  | Hall 4 substation energisation and LV distribution live |  | 15d | 2027-05-19 | 2027-06-08 | VE-1603, VE-1613, VE-1802 | 156d |  |  | Electrical Crew [330 h] | 498,805.82 |
|  | 11 | **11 ELV, Fire, Security & BMS/DCIM** |  |  | 2026-11-25 | 2027-05-19 |  |  |  |  |  |  |
| EL-1100 |  | Containment and cable pulling — Halls 1-2 |  | 30d | 2026-11-25 | 2027-01-11 | ST-1400, VE-1620 | 13d |  |  | ELV Crew [600 h] | 711,764.71 |
| EL-1110 |  | Containment and cable pulling — Halls 3-4 |  | 30d | 2026-12-07 | 2027-01-21 | EL-1100 SS+10d, ST-1410 | 276d |  |  | ELV Crew [600 h] | 711,764.71 |
| EL-1200 |  | Fire detection installation — Halls 1-2 |  | 25d | 2026-12-07 | 2027-01-14 | EL-1100 SS+10d | 29d |  |  | ELV Crew [300 h] | 355,882.35 |
| EL-1400 |  | BMS/DCIM head-end and field devices |  | 40d | 2026-12-07 | 2027-02-04 | EL-1100 SS+10d | 28d |  |  | ELV Crew [480 h] | 569,411.76 |
| EL-1300 |  | Gas suppression installation — Halls 1-2 |  | 25d | 2026-12-17 | 2027-01-26 | EL-1200 SS+10d | 40d |  |  | ELV Crew [300 h] | 355,882.35 |
| EL-1210 |  | Fire detection installation — Halls 3-4 |  | 25d | 2027-01-22 | 2027-02-25 | EL-1110 | 272d |  |  | ELV Crew [300 h] | 355,882.35 |
| EL-1500 |  | Security, access control and CCTV — internal |  | 30d | 2027-01-27 | 2027-03-09 | EL-1300 | 229d |  |  | ELV Crew [360 h] | 427,058.82 |
| EL-1600 |  | L3 point-to-point testing — Section 1 |  | 20d | 2027-02-05 | 2027-03-04 | EL-1200, EL-1300, EL-1400 | 25d |  |  | Commissioning Team (MEP) [240 h] | 284,705.88 |
| EL-1310 |  | Gas suppression installation — Halls 3-4 |  | 25d | 2027-02-26 | 2027-04-05 | EL-1210 | 272d |  |  | ELV Crew [300 h] | 355,882.35 |
| EL-1610 |  | L3 point-to-point testing — Sections 2-4 |  | 25d | 2027-03-05 | 2027-04-12 | EL-1600 | 39d |  |  | Commissioning Team (MEP) [300 h] | 355,882.35 |
| EL-1900 |  | ELV complete — Section 1 |  | 0d | 2027-03-30 | 2027-03-30 | EL-1700 | 23d |  |  | ELV Crew | 14,235.29 |
| EL-1910 |  | ELV complete — Sections 2-4 |  | 0d | 2027-05-19 | 2027-05-19 | EL-1710 | 35d |  |  | ELV Crew | 14,235.29 |

| ID | WBS | Activity | Type | Duration | Start | Finish | Predecessors | Total float | Resources | Cost |
| --- | --- | --- | --- | --- | --- | --- | --- | --- | --- | --- |
|  | 12 | **12 External Works & Site Infrastructure** |  |  | 2026-03-18 | 2027-10-07 |  |  |  |  |
| EX-1100 |  | Fibre entry — route A ducting and chambers |  | 30d | 2026-03-18 | 2026-04-30 | EX-1010 | 335d | External Works Crew [480 h] | 501,719.46 |
| EX-1110 |  | Fibre entry — route B ducting and chambers |  | 30d | 2026-05-04 | 2026-06-15 | EX-1100 | 332d | External Works Crew [480 h] | 501,719.46 |
| EX-1200 |  | Permanent site roads and hardstanding — phase 1 |  | 35d | 2027-02-19 | 2027-04-12 | EX-1110, ST-1600, GW-1900 | 84d | External Works Crew [560 h] | 585,339.37 |
| EX-1300 |  | Perimeter security fence and gates |  | 30d | 2027-04-13 | 2027-05-25 | EX-1200 | 83d | External Works Crew [480 h] | 501,719.46 |
| EX-1400 |  | External lighting and CCTV columns |  | 25d | 2027-05-26 | 2027-06-30 | EX-1300 | 103d | External Works Crew [400 h] | 418,099.55 |
| EX-1500 |  | Car parking, footpaths and hardstanding — permanent |  | 30d | 2027-07-01 | 2027-09-01 | EX-1400 | 102d | External Works Crew [480 h] | 501,719.46 |
| EX-1700 |  | Gatehouse and weighbridge commissioning |  | 20d | 2027-07-01 | 2027-08-18 | EX-1400, EL-1500 | 116d | Commissioning Team (MEP) [240 h] | 250,859.73 |
| EX-1600 |  | Landscaping and reinstatement |  | 25d | 2027-09-02 | 2027-10-06 | EX-1500, EX-1700 | 81d | External Works Crew [400 h] | 418,099.55 |
| EX-1900 |  | External works complete |  | 0d | 2027-10-07 | 2027-10-07 | EX-1600 | 83d | External Works Crew | 16,723.98 |
|  | 13 | **13 Commissioning & Sectional Handover** |  |  | 2027-01-14 | 2027-10-19 |  |  |  |  |
| IL-1700 |  | Static completion and pressure testing — Section 1 |  | 8d | 2027-01-14 | 2027-01-25 | IL-1531, IL-1610, IL-1510 | 67d | Commissioning Team (MEP) [96 h] | 120,079.87 |
| IL-1701 |  | Static completion and pressure testing — Section 2 |  | 10d | 2027-01-25 | 2027-02-05 | IL-1532, IL-1510 | 102d | Commissioning Team (MEP) [120 h] | 150,099.84 |
| IL-1710 |  | Commissioning L4 — Hall 1 |  | 8d | 2027-01-26 | 2027-02-04 | IL-1700 | 69d | Commissioning Team (MEP) [96 h] | 120,079.87 |
| IL-1702 |  | Static completion and pressure testing — Section 3 |  | 10d | 2027-02-02 | 2027-02-15 | IL-1533, IL-1510 | 188d | Commissioning Team (MEP) [120 h] | 150,099.84 |
| IL-1711 |  | Commissioning L5 — Hall 1 (witnessed) |  | 5d | 2027-02-05 | 2027-02-11 | IL-1710 | 69d | Commissioning Team (MEP) [60 h] | 75,049.92 |
| IL-1712 |  | Commissioning L4 — Hall 2 |  | 15d | 2027-02-08 | 2027-02-26 | IL-1701 | 102d | Commissioning Team (MEP) [180 h] | 225,149.75 |
| IL-1703 |  | Static completion and pressure testing — Section 4 |  | 10d | 2027-02-11 | 2027-02-24 | IL-1534, IL-1510 | 245d | Commissioning Team (MEP) [120 h] | 150,099.84 |
| IL-1800 |  | SECTIONAL COMPLETION 1 — Data Hall 1 mechanical |  | 0d | 2027-02-12 | 2027-02-12 | IL-1711 | 69d | Commissioning Team (MEP) | 15,009.98 |
| IL-1714 |  | Commissioning L4 — Hall 3 |  | 15d | 2027-02-16 | 2027-03-08 | IL-1702 | 188d | Commissioning Team (MEP) [180 h] | 225,149.75 |
| IL-1716 |  | Commissioning L4 — Hall 4 |  | 15d | 2027-02-25 | 2027-03-17 | IL-1703 | 245d | Commissioning Team (MEP) [180 h] | 225,149.75 |
| IL-1713 |  | Commissioning L5 — Hall 2 (witnessed) |  | 8d | 2027-03-01 | 2027-03-10 | IL-1712 | 102d | Commissioning Team (MEP) [96 h] | 120,079.87 |
| EL-1700 |  | L4 integrated systems testing support — Section 1 |  | 15d | 2027-03-05 | 2027-03-25 | EL-1600 | 27d | Commissioning Team (MEP) [180 h] | 213,529.41 |
| IL-1715 |  | Commissioning L5 — Hall 3 (witnessed) |  | 8d | 2027-03-09 | 2027-03-18 | IL-1714 | 188d | Commissioning Team (MEP) [96 h] | 120,079.87 |
| IL-1810 |  | SECTIONAL COMPLETION 2 — Data Hall 2 mechanical |  | 0d | 2027-03-11 | 2027-03-11 | IL-1713 | 104d | Commissioning Team (MEP) | 15,009.98 |
| LB-1000 |  | Load-bank hire, fuel & commissioning power arrangement |  | 15d | 2027-03-16 | 2027-04-07 | VE-1520 | -1d | Commissioning Team (MEP) [180 h] | 877,215.19 |
| IL-1717 |  | Commissioning L5 — Hall 4 (witnessed) |  | 8d | 2027-03-18 | 2027-03-31 | IL-1716 | 245d | Commissioning Team (MEP) [96 h] | 120,079.87 |
| IL-1820 |  | SECTIONAL COMPLETION 3 — Data Hall 3 mechanical |  | 0d | 2027-03-19 | 2027-03-19 | IL-1715 | 188d | Commissioning Team (MEP) | 15,009.98 |
| VE-1900 |  | Commissioning L4 and L5 — Hall 1 (witnessed) |  | 20d | 2027-03-22 | 2027-04-20 | VE-1800 SS+8d, VE-1550, LB-1000 SS | 1d | Commissioning Team (MEP) [240 h] | 362,767.87 |
| IL-1720 |  | O&M manuals and as-built records |  | 12d | 2027-04-01 | 2027-04-16 | IL-1717 | 243d | Commissioning Team (MEP) [144 h] | 180,119.8 |
| EL-1710 |  | L4 integrated systems testing support — Sections 2-4 |  | 25d | 2027-04-13 | 2027-05-18 | EL-1610 | 36d | Commissioning Team (MEP) [300 h] | 355,882.35 |
| IL-1730 |  | Warranties, spare parts and maintenance training handover |  | 8d | 2027-04-19 | 2027-04-28 | IL-1720 | 242d | Commissioning Team (MEP) [96 h] | 120,079.87 |
| VE-1950 |  | SECTIONAL COMPLETION 1 — Data Hall 1 electrical |  | 0d | 2027-04-21 | 2027-04-21 | VE-1900 | 1d | Commissioning Team (MEP) | 18,138.39 |
| MC-C1 |  | Section 1 — integrated L4/L5 witnessing, reliability run & statutory/occupancy inspection |  | 5d | 2027-04-22 | 2027-04-28 | IL-1800, VE-1950, EL-1900, IL-1510, IL-1520, VE-1520, VE-1530, VE-1540, ST-1300 | 1d | Commissioning Team (MEP) [60 h] | 292,405.06 |
| VE-1901 |  | Commissioning L4 and L5 — Hall 2 (witnessed) |  | 20d | 2027-04-27 | 2027-05-25 | VE-1801, VE-1950 | 29d | Commissioning Team (MEP) [240 h] | 362,767.87 |
| SEC1 |  | SECTIONAL COMPLETION 1 — Data Hall 1 Taking Over | milestone | 0d | 2027-04-29 | 2027-04-29 | MC-C1, FI-1601 | 1d | Commissioning Team (MEP) | 58,481.01 |
| VE-1951 |  | SECTIONAL COMPLETION 2 — Data Hall 2 electrical |  | 0d | 2027-05-26 | 2027-05-26 | VE-1901 | 28d | Commissioning Team (MEP) | 18,138.39 |
| MC-C2 |  | Section 2 — integrated L4/L5 witnessing, reliability run & statutory/occupancy inspection |  | 5d | 2027-05-27 | 2027-06-02 | IL-1810, VE-1951, EL-1910 | 28d | Commissioning Team (MEP) [60 h] | 292,405.06 |
| VE-1902 |  | Commissioning L4 and L5 — Hall 3 (witnessed) |  | 20d | 2027-05-27 | 2027-06-23 | VE-1802, VE-1951 | 91d | Commissioning Team (MEP) [240 h] | 362,767.87 |
| SEC2 |  | SECTIONAL COMPLETION 2 — Data Hall 2 Taking Over | milestone | 0d | 2027-06-03 | 2027-06-03 | MC-C2, FI-1602 | 29d | Commissioning Team (MEP) | 58,481.01 |
| VE-1952 |  | SECTIONAL COMPLETION 3 — Data Hall 3 electrical |  | 0d | 2027-06-24 | 2027-06-24 | VE-1902 | 91d | Commissioning Team (MEP) | 18,138.39 |
| MC-C3 |  | Section 3 — integrated L4/L5 witnessing, reliability run & statutory/occupancy inspection |  | 5d | 2027-06-28 | 2027-07-02 | IL-1820, VE-1952, EL-1910 | 88d | Commissioning Team (MEP) [60 h] | 292,405.06 |
| VE-1903 |  | Commissioning L4 and L5 — Hall 4 (witnessed) |  | 20d | 2027-06-28 | 2027-08-13 | VE-1803, VE-1952 | 137d | Commissioning Team (MEP) [240 h] | 362,767.87 |
| SEC3 |  | SECTIONAL COMPLETION 3 — Data Hall 3 Taking Over | milestone | 0d | 2027-07-05 | 2027-07-05 | MC-C3, FI-1610 | 88d | Commissioning Team (MEP) | 58,481.01 |
| VE-1953 |  | SECTIONAL COMPLETION 4 — Data Hall 4 electrical |  | 0d | 2027-08-16 | 2027-08-16 | VE-1903, VE-1540, VE-1700 | 127d | Commissioning Team (MEP) | 18,138.39 |
| VE-1960 |  | O&M manuals, as-builts and warranties |  | 12d | 2027-08-16 | 2027-08-31 | VE-1903 | 119d | Commissioning Team (MEP) [144 h] | 217,660.72 |
| VE-1970 |  | Subcontract works complete |  | 0d | 2027-09-01 | 2027-09-01 | VE-1950, VE-1951, VE-1952, VE-1953, VE-1960 | 120d | Commissioning Team (MEP) | 18,138.39 |
| IL-1830 |  | SECTIONAL COMPLETION 4 — Data Hall 4 mechanical |  | 0d | 2027-10-11 | 2027-10-11 | IL-1717, IL-1560, IL-1520, IL-1600 | 71d | Commissioning Team (MEP) | 15,009.98 |
| IL-1740 |  | Subcontract works complete |  | 0d | 2027-10-12 | 2027-10-12 | IL-1800, IL-1810, IL-1820, IL-1830, IL-1730 | 79d | Commissioning Team (MEP) | 15,009.98 |
| MC-C4 |  | Section 4 — integrated L4/L5 witnessing, reliability run & statutory/occupancy inspection (incl. waste-heat demonstratio |  | 5d | 2027-10-12 | 2027-10-18 | IL-1830, VE-1953, EL-1910 | 71d | Commissioning Team (MEP) [60 h] | 292,405.06 |
| SEC4 |  | SECTIONAL COMPLETION 4 — Data Hall 4, admin/NOC & external works Taking Over | milestone | 0d | 2027-10-19 | 2027-10-19 | MC-C4, EX-1900, FI-1400, IL-1560 | 72d | Commissioning Team (MEP) | 58,481.01 |

| ID | WBS | Activity | Type | Duration | Start | Finish | Predecessors | Total float | Resources | Cost |
| --- | --- | --- | --- | --- | --- | --- | --- | --- | --- | --- |
|  | 14 | **14 Completion & Handover** |  |  | 2027-12-27 | 2027-12-27 |  |  |  |  |
| PC |  | PROJECT COMPLETION — Time for Completion | milestone | 0d | 2027-12-27 | 2027-12-27 | SEC1, SEC2, SEC3, SEC4, GW-1110, GW-1210, GW-1310, GW-1900, ST-1120, ST-1220, ST-1230, ST-1900, ST-1910, ST-1950, EN-1900, FI-1010, FI-1900, FI-1910, IL-1600, IL-1713, IL-1715, IL-1740, VE-1130, VE-1970, EL-1010, EX-1010, EX-1100, EX-1110, PM-1000 FF, DE-2200 FF | 4d | Management & Supervision | 29,240.51 |
