# Polaris DC-1

Schedule from Primavera P6, 2026-03-02 to 2029-07-13, data date 2026-03-02, costs in EUR.
Must finish by 2029-07-13

## Calendars

- Project Calendar: Mon-Fri 08:00-12:00, 13:00-17:00; Sat-Sun off. Exceptions (off unless hours are given): 2026-04-03, 2026-04-06, 2026-05-01, 2026-05-14, 2026-06-19, 2026-07-06 to 2026-07-24, 2026-12-24 to 2026-12-25, 2027-01-01, 2027-01-06, 2027-03-26, 2027-03-29, 2027-05-06, 2027-06-25, 2027-07-12 to 2027-07-30, 2027-12-06, 2027-12-24, 2028-01-06, 2028-04-14, 2028-04-17, 2028-05-01, 2028-05-25, 2028-06-23, 2028-12-06, 2028-12-25 to 2028-12-26.

## Resources

| Resource | Group |
| --- | --- |
| Project Management | labor |
| Site Establishment Crew | labor |
| HSE & Management | labor |
| Design Management | labor |
| Survey & Permits | labor |
| Procurement | labor |
| Utility Interface | labor |
| Electrical Procurement | labor |
| Design & Permits | labor |
| Mechanical Procurement | labor |
| Site Management | labor |
| Earthworks Crew | labor |
| Blasting Crew | labor |
| Piling Crew | labor |
| Civil Crew | labor |
| Concrete Crew | labor |
| Structural Steel Crew | labor |
| Precast Crew | labor |
| Vendor Manufacturing | labor |
| Envelope Crew | labor |
| Mechanical Pipework Crew | labor |
| Mechanical Plant Crew | labor |
| Mechanical Crew | labor |
| Electrical Crew | labor |
| Fire Detection Crew | labor |
| Fire Protection Crew | labor |
| Security Crew | labor |
| ICT Crew | labor |
| Mechanical Commissioning | labor |
| Fit-Out Crew | labor |
| BMS Controls Crew | labor |
| Systems Installation Crew | labor |
| Commissioning Team | labor |
| Commissioning Manager | labor |
| Schedule Contingency | labor |

## Schedule

| ID | WBS | Activity | Type | Duration | Start | Finish | Predecessors | Total float | Free float | Resources | Cost |
| --- | --- | --- | --- | --- | --- | --- | --- | --- | --- | --- | --- |
|  | 1 | **1** |  |  | 2026-03-02 | 2026-03-02 |  |  |  |  |  |
|  | 1 | **Contract Milestones** |  |  | 2026-03-02 | 2026-03-02 |  |  |  |  |  |
| 10 |  | Project Commencement | milestone | 0d | 2026-03-02 | 2026-03-02 |  | 0d |  | Project Management |  |
|  | 2 | **2** |  |  | 2026-03-02 | 2026-03-20 |  |  |  |  |  |
|  | 1 | **Preliminaries & mobilisation** |  |  | 2026-03-02 | 2026-03-20 |  |  |  |  |  |
| 20 |  | Mobilisation, site establishment and temporary services |  | 15d | 2026-03-02 | 2026-03-20 | 10 | 95d |  | Site Establishment Crew [960 h] | 6,006,000 |
|  | 2 | **Mobilisation & preliminaries** |  |  | 2026-03-02 | 2026-03-13 |  |  |  |  |  |
| 30 |  | Site safety, statutory supervisor appointment and initial HSE plan |  | 10d | 2026-03-02 | 2026-03-13 | 10 | 60d |  | HSE & Management [160 h] | 203,206.82 |
|  | 3 | **3** |  |  | 2026-03-02 | 2026-08-28 |  |  |  |  |  |
|  | 1 | **Design & approvals** |  |  | 2026-03-02 | 2026-04-14 |  |  |  |  |  |
| 40 |  | Design development, coordinated IFC and tenant interface freeze |  | 30d | 2026-03-02 | 2026-04-14 | 10 | 0d |  | Design Management [1440 h] | 174,932.04 |
| 400 |  | Design coordination, tenant interface & detailed design freeze |  | 30d | 2026-03-02 | 2026-04-14 | 10 | 369d | 0d | Design Management [960 h] |  |
|  | 2 | **Design & approvals** |  |  | 2026-04-15 | 2026-06-11 |  |  |  |  |  |
| 50 |  | Building permit condition close-out / method statements and approvals |  | 40d | 2026-04-15 | 2026-06-11 | 40 | 0d |  | Design & Permits [960 h] | 188,388.35 |
|  | 3 | **Design & approvals** |  |  | 2026-03-02 | 2026-03-20 |  |  |  |  |  |
| 60 |  | Geotechnical verification, pre-condition survey and blasting permit |  | 15d | 2026-03-02 | 2026-03-20 | 10 | 55d |  | Survey & Permits [360 h] | 308,680.83 |
|  | 4 | **Design & approvals** |  |  | 2026-06-12 | 2026-08-28 |  |  |  |  |  |
| 120 |  | Permit, survey, archaeological watching and workfront release |  | 40d | 2026-06-12 | 2026-08-28 | 30, 50, 60 | 0d |  | Site Management [640 h] | 256,427.65 |
|  | 4 | **4** |  |  | 2026-03-02 | 2028-05-05 |  |  |  |  |  |
|  | 1 | **Long-lead procurement** |  |  | 2026-03-02 | 2026-03-02 |  |  |  |  |  |
| 70 |  | Place orders for transformer and other HV long-lead equipment |  | 1d | 2026-03-02 | 2026-03-02 | 10 | 228d | 0d | Procurement [16 h] |  |
|  | 2 | **MEP long-lead procurement** |  |  | 2026-04-15 | 2028-05-05 |  |  |  |  |  |
| 410 |  | Mechanical plant procurement — chillers, dry coolers, CRAH & pumps |  | 130d | 2026-04-15 | 2026-11-06 | 400 | 369d | 279d | Mechanical Procurement [2080 h] | 6,949,412 |
| 80 |  | Transformers — procurement and delivery (52-week lead) |  | 260d | 2027-04-07 | 2028-05-05 | 500 | 303d |  | Vendor Manufacturing [2080 h] |  |

Notes:
- 10: Notes: 2026-03-02 per PDC-PC-001 Rev C. This baseline uses this as Day 0; do not constraint-force downstream TO dates.
- 20: Duration Basis: PRJ-001 — hist-prj-001-act-1 — Design Team Mobilization: 10 working days / Notes: A.01-A.05 sum €4,129,259.00; A.06/A.07/A.08/A.09 allocated separately to 60/120/30/40. / Expenses: Mobilisation, site establishment and temporary services — Materials/Plant/Sublet 6006000
- 30: Duration Basis: PRJ-001 — hist-prj-001-act-1 — Design Team Mobilization 10d; HSE setup duration proxy. / Notes: HSE mobilization activity, analog duration 10d; HSE staffing/plans also embedded in A.08. Cost loaded in A preliminaries only. / Expenses: Site safety, statutory supervisor appointment and initial HSE plan — Materials/Plant/Sublet 203207
- 40: Duration Basis: PRJ-001 — hist-prj-001-act-15 — Design Development / Detailed Design: 30 working days / Notes: The BOQ uses explicit design development/risk allowances A.09, B.12, C.09, D.09, E.08, F.13, G.15, H.10, I.09, J.08; do not add a second unsubstantiated design package value. / Expenses: Design development, coordinated IFC and tenant interface freeze — Materials/Plant/Sublet 174932
- 400: Duration Basis: PRJ-001 — hist-prj-001-act-15 — Design Development / Detailed Design 30wd LS
- 50: Duration Basis: PRJ-001 — hist-prj-001-act-5 — Authority Review & Condition Response, 40 working days / Notes: Existing planning condition discharge/authority review basis; 40d analog review-window proxy. Carry as provisional permit duration, not a contract-stated review deadline. / Expenses: Building permit condition close-out / method statements and approvals — Materials/Plant/Sublet 188388
- 60: Duration Basis: PRJ-001 — hist-prj-001-act-127 — Existing Services Survey & Marking, 5 working days / Notes: Pre-condition surveys and blasting permit activity. No permit duration stated in supplied registers; 15d planning allowance tied to existing services survey 5d plus permit/submission scope. Blasting must comply Mon-Fri 08:00–18:00. / Expenses: Geotechnical verification, pre-condition survey and blasting permit — Materials/Plant/Sublet 308681
- 120: Duration Basis: PRJ-001 — hist-prj-001-act-5 — Authority Review & Condition Response, 40 working days / Notes: Authority permit/condition release + prerequisite closeout: hist PRJ-001 Authority Review & Condition Response is 40d LS, used as direct duration; no date constraint. / Expenses: Permit, survey, archaeological watching and workfront release — Materials/Plant/Sublet 256428
- 70: Duration Basis: PRJ-004 — hist-prj-004-act-98 — District Heating Substation procurement and manufacture, 30 working days / Notes: Procurement activity carries no activity cost: equipment purchase value booked to respective install/delivery activities. PO stage is not itself a separate BOQ charge.
- 410: Duration Basis: PRJ-001 — hist-prj-001-act-172 — Chiller / Cooling Plant Installation 5wd LS; procurement register governs lead. / Notes: Procurement packages include chiller 26w, dry coolers 22w, CRAH 22w, and heating plant 30w per PDC-LT-001; this aggregate approximation is not individual item sequencing. Schedule activity split captures install systems; procurement dates remain notes. / Expenses: Mechanical plant procurement — chillers, dry coolers, CRAH & pumps — Materials/Plant/Sublet 6949412
- 80: Duration Basis: PRJ-004 — hist-prj-004-act-98 — District Heating Substation — Tender, Award & Manufacturing: 30 working days / Notes: PO/lead-time activity is logic-only; transformer purchase price is included in the full G.01-G.15 value booked once on activity 270.

| ID | WBS | Activity | Duration | Start | Finish | Predecessors | Total float | Free float | Resources | Cost |
| --- | --- | --- | --- | --- | --- | --- | --- | --- | --- | --- |
|  | 3 | **Long-lead procurement** |  | 2026-03-03 | 2027-04-06 |  |  |  |  |  |
| 90 |  | Procure remaining mechanical plant, UPS, MV/LV gear, generators, and controls | 150d | 2026-03-03 | 2026-10-26 | 70 | 418d |  | Procurement [4800 h] |  |
|  | 1 | **Transformers** |  | 2026-03-03 | 2027-04-06 |  |  |  |  |  |
| 500 |  | Transformer manufacturing/delivery — 2 units (G.01) | 260d | 2026-03-03 | 2027-04-06 | 70 | 228d | 0d | Electrical Procurement [4160 h] |  |
|  | 2 | **Generators** |  | 2026-03-03 | 2027-01-08 |  |  |  |  |  |
| 540 |  | Generator procurement/manufacture/delivery — 8 no. (G.05) | 200d | 2026-03-03 | 2027-01-08 | 70 | 443d | 238d | Electrical Procurement [3200 h] |  |
|  | 3 | **UPS** |  | 2026-03-03 | 2026-10-26 |  |  |  |  |  |
| 570 |  | UPS procurement/delivery — 16 modules (G.08) | 150d | 2026-03-03 | 2026-10-26 | 70 | 368d | 288d | Electrical Procurement [2400 h] |  |
|  | 4 | **Utility interfaces** |  | 2026-03-02 | 2027-04-09 |  |  |  |  |  |
| 100 |  | Utility application, outage booking and off-site grid works | 264d | 2026-03-02 | 2027-04-09 | 10 | 425d |  | Utility Interface [4224 h] |  |
|  | 5 | **Utility interfaces** |  | 2026-03-02 | 2027-10-21 |  |  |  |  |  |
| 110 |  | District heating off-taker boundary completion window (third-party) | 386d | 2026-03-02 | 2027-10-21 | 10 | 337d | 73d | Utility Interface [3088 h] |  |
|  | 5 | **5** |  | 2026-08-31 | 2027-08-17 |  |  |  |  |  |
|  | 1 | **Enabling & earthworks** |  | 2026-08-31 | 2026-09-15 |  |  |  |  |  |
| 130 |  | Site clearance, services and erosion controls | 12d | 2026-08-31 | 2026-09-15 | 20, 120 | 0d |  | Earthworks Crew [1536 h] | 168,512.26 |
|  | 2 | **Earthworks - Building pad** |  | 2026-09-16 | 2027-01-22 |  |  |  |  |  |
| 140 |  | Bulk excavation in glacial till | 89d | 2026-09-16 | 2027-01-22 | 130 | 0d |  | Earthworks Crew [11392 h] | 538,020.62 |
|  | 3 | **Earthworks - Building pad** |  | 2026-10-14 | 2026-12-30 |  |  |  |  |  |
| 150 |  | Rock excavation by controlled blasting incl. vibration monitoring | 54d | 2026-10-14 | 2026-12-30 | 130, 140 SS+20d | 15d |  | Blasting Crew [2592 h] | 465,945.85 |
|  | 4 | **Foundations** |  | 2027-01-25 | 2027-03-12 |  |  |  |  |  |
| 160 |  | Piling and load tests | 35d | 2027-01-25 | 2027-03-12 | 140, 150 | 0d |  | Piling Crew [3360 h] | 904,688.8 |
|  | 5 | **Foundations** |  | 2027-03-15 | 2027-04-28 |  |  |  |  |  |
| 170 |  | Pile caps and ground beams | 31d | 2027-03-15 | 2027-04-28 | 160 | 0d |  | Concrete Crew [3968 h] | 630,714.6 |
|  | 6 | **Ground-bearing slab** |  | 2027-04-29 | 2027-08-17 |  |  |  |  |  |
| 180 |  | Ground-bearing slab 250 mm (Section 1/2) | 31d | 2027-04-29 | 2027-06-11 | 170 | 0d |  | Concrete Crew [3968 h] | 1,143,899.7 |
| 190 |  | Ground-bearing slab 250 mm (Section 3/4) | 31d | 2027-06-14 | 2027-08-17 | 180 | 0d |  | Concrete Crew [3968 h] | 1,143,899.7 |

Notes:
- 90: Duration Basis: PRJ-004 — hist-prj-004-act-98 — Substation vendor procurement/manufacturing, 30d; grouped package procurement allowance. / Notes: G.15 design development/risk allowance, not other procurement.
- 500: Duration Basis: PRJ-004 — hist-prj-004-act-112 — MV/LV switchgear manufacturing/FAT 40d LS; 52-week transformer lead stated in PDC-LT-001. / Notes: Procurement logic activity; purchase value is carried in activity 80 once.
- 540: Duration Basis: PRJ-001 — hist-prj-001-act-107 — Switchgear manufacturing 40wd; 40-week G.05 register lead governs. / Notes: Procurement logic activity; purchase value carried in install/commissioning package 280 to avoid double count.
- 570: Duration Basis: PRJ-004 — hist-prj-004-act-112 — Switchgear manufacturing 40wd; UPS register lead governs.
- 100: Duration Basis: PRJ-001 — hist-prj-001-act-33 — Utility Connection Application & Grid Study, 20 working days / Notes: DNO no-earlier-than energisation 12-Mar-2027 vs contract Hall 1 access 02-Mar-2027, 10 calendar days later. Work window represented as 264 workdays from Commencement solely as proxy to earliest DNO date; contract access is not constraint-forced.
- 110: Duration Basis: PRJ-005 — hist-prj-005-act-98 — DH substation procurement/manufacture analog, 30d; schedule has directly stated third-party completion date 2027-08-31. / Notes: Stated off-taker-side boundary works complete 31-Aug-2027 (PDC-DH-001). 386 workdays from 2-Mar-2026 is approximate time window; date is directly stated and is not a modeled delay from commencement.
- 130: Duration Basis: PRJ-001 — hist-prj-001-act-132 — Bulk Earthworks & Rough Grading, 2,500 m3, 10 days, 8 members x 2 crews / Notes: B.01 site clearance value EUR 168,512.26; quantity 26,565m2. No measured area analog, duration proxy. / Expenses: Site clearance, services and erosion controls — Materials/Plant/Sublet 168512
- 140: Duration Basis: PRJ-001 — hist-prj-001-act-132 — Bulk Earthworks & Rough Grading, 2,500m3, 10d, 8 members × 2 crews; productivity 15.625m3/person-day. / Notes: BOQ Section B total selling value mapped to earthworks/foundations package; no line-by-line activity split represented. / Expenses: Bulk excavation in glacial till — Materials/Plant/Sublet 538021
- 150: Duration Basis: PRJ-001 — hist-prj-001-act-137 — Basement Excavation & Shoring, 3,000m3, 15d, 8 persons x 2 crews; proxy only, blasting-specific analogue absent. / Notes: B.03 rock excavation value EUR 465,945.85, qty 3,213.6m3. / Expenses: Rock excavation by controlled blasting incl. vibration monitoring — Materials/Plant/Sublet 465946
- 160: Duration Basis: PRJ-004 — hist-prj-004-act-138 — Rock-Socketed Piles, 100 piles, 30 working days, 6 members per crew × 2 crews; plus 5wd winter note if Jan-Feb. / Notes: 40 foundations total (B.05 30 + B.06 10). No matching historic foundation-count analogue; rock socketed pile rate is only a proxy. Allowance 35wd, explicit provisional duration, to be revised after foundation method and cycle validated; no false productivity claim. / Expenses: Piling and load tests — Materials/Plant/Sublet 904689
- 170: Duration Basis: PRJ-001 — hist-prj-001-act-140 — Pile Caps & Ground Beams, 800m3 RC, 10d, 8 persons x 2 crews. / Notes: B.07 ground beams cost EUR 630,714.60; BOQ quantity is 1,450m. / Expenses: Pile caps and ground beams — Materials/Plant/Sublet 630715
- 180: Duration Basis: PRJ-001 — hist-prj-001-act-141 — Foundation Slab, 600m3 RC, 10d, 8 persons x 2 crews. / Notes: B.08 first half 6,418.5m2 slab; value half B.08 €1,143,899.70. / Expenses: Ground-bearing slab 250 mm (Section 1/2) — Materials/Plant/Sublet 1143900
- 190: Duration Basis: PRJ-001 — hist-prj-001-act-141 — Foundation Slab, 600m3 RC, 10d, 8 persons x 2 crews. / Notes: B.08 second half 6,418.5m2 slab; value half B.08 €1,143,899.70. / Expenses: Ground-bearing slab 250 mm (Section 3/4) — Materials/Plant/Sublet 1143900

| ID | WBS | Activity | Duration | Start | Finish | Predecessors | Total float | Free float | Resources | Cost |
| --- | --- | --- | --- | --- | --- | --- | --- | --- | --- | --- |
|  | 7 | **Groundwork & external utilities** |  | 2027-01-25 | 2027-03-01 |  |  |  |  |  |
| 230 |  | Groundworks drainage, retaining / stormwater and external utilities | 26d | 2027-01-25 | 2027-03-01 | 140 | 562d | 202d | Civil Crew [1248 h] | 711,530.09 |
|  | 6 | **6** |  | 2027-03-15 | 2027-08-12 |  |  |  |  |  |
|  | 1 | **Structure** |  | 2027-03-15 | 2027-08-12 |  |  |  |  |  |
| 200 |  | Structural steel fabrication and erection (449.28 t) | 90d | 2027-03-15 | 2027-08-12 | 160 | 3d |  | Structural Steel Crew [8640 h] | 2,167,149.52 |
|  | 2 | **Structure** |  | 2027-03-15 | 2027-08-12 |  |  |  |  |  |
| 210 |  | Secondary structure, MEP spine steel, precast panels and in-situ separation walls | 90d | 2027-03-15 | 2027-08-12 | 160 | 3d |  | Precast Crew [8640 h] | 6,610,850.48 |
|  | 7 | **7** |  | 2027-08-18 | 2028-01-07 |  |  |  |  |  |
|  | 1 | **Envelope** |  | 2027-08-18 | 2028-01-07 |  |  |  |  |  |
| 220 |  | Building envelope — cladding, roof, louvres, doors, airtightness and roof access | 100d | 2027-08-18 | 2028-01-07 | 200, 210, 190 | 0d |  | Envelope Crew [12800 h] | 5,544,000.01 |
|  | 8 | **8** |  | 2028-01-10 | 2028-09-01 |  |  |  |  |  |
|  | 1 | **Mechanical systems** |  | 2028-01-10 | 2028-07-14 |  |  |  |  |  |
| 240 |  | Chilled-water pipework installation and pressure test | 110d | 2028-01-10 | 2028-06-15 | 220, 190 | 0d |  | Mechanical Pipework Crew [10560 h] | 1,889,088.28 |
|  | 1 | **Chiller install** |  | 2028-01-10 | 2028-01-28 |  |  |  |  |  |
| 420 |  | Install chillers — 4 no. | 15d | 2028-01-10 | 2028-01-28 | 220, 410 | 95d |  | Mechanical Plant Crew [480 h] |  |
|  | 2 | **Dry coolers** |  | 2028-01-10 | 2028-02-04 |  |  |  |  |  |
| 430 |  | Install dry coolers — 10 no. | 20d | 2028-01-10 | 2028-02-04 | 220, 410 | 90d |  | Mechanical Plant Crew [640 h] |  |
|  | 3 | **CRAH** |  | 2028-01-10 | 2028-02-04 |  |  |  |  |  |
| 440 |  | Install CRAH units — 28 no. | 20d | 2028-01-10 | 2028-02-04 | 220, 410 | 90d |  | Mechanical Plant Crew [1280 h] |  |
|  | 4 | **Ancillary plant** |  | 2028-01-10 | 2028-01-28 |  |  |  |  |  |
| 450 |  | Install pump sets/vessels/glycol dosing — 13 packages | 15d | 2028-01-10 | 2028-01-28 | 220, 410 | 95d |  | Mechanical Plant Crew [480 h] |  |
|  | 5 | **Ancillary HVAC** |  | 2028-01-10 | 2028-02-11 |  |  |  |  |  |
| 460 |  | Ancillary ventilation/smoke extract (F.10) | 25d | 2028-01-10 | 2028-02-11 | 220, 400 | 225d |  | Mechanical Crew [3200 h] | 2,496,402.83 |
|  | 6 | **Mechanical precommissioning** |  | 2028-06-16 | 2028-07-14 |  |  |  |  |  |
| 470 |  | Water treatment, insulation, flushing/balancing (F.11/F.12) | 20d | 2028-06-16 | 2028-07-14 | 240, 420, 430, 440, 450 | 0d |  | Mechanical Crew [640 h] | 1,945,472.55 |

Notes:
- 230: Duration Basis: PRJ-001 — hist-prj-001-act-132 — Bulk Earthworks & Rough Grading, 2,500m3, 10d, 8 persons x 2 crews; external utility proxy. / Notes: I.01-I.09 entire external works value; coarse package cost; separate external activities would be required for detailed cost/resource validation. / Expenses: Groundworks drainage, retaining / stormwater and external utilities — Materials/Plant/Sublet 711530
- 200: Duration Basis: PRJ-004 — hist-prj-004-act-151 — Profiled Metal Deck Installation, 4,500m2, 20d, 6 persons x 2 crews; steel erection is a proxy, not direct tonnage analogue. / Notes: BOQ Section C total selling value mapped to structure package; grouped. / Expenses: Structural steel fabrication and erection (449.28 t) — Materials/Plant/Sublet 2167150
- 210: Duration Basis: PRJ-001 — hist-prj-001-act-146 — Precast Floor Plank Installation, 4,000m2, 30d, 6 persons x 2 crews; panel installation is proxy only. / Notes: Remaining C.02-C.09 value €6,610,850.58; qty is mixed (steel t, precast count, RC m3, deck m2, fireproof area, LS) and not a valid single quantity. Activity contains separate trade scopes and should be decomposed further. / Expenses: Secondary structure, MEP spine steel, precast panels and in-situ separation walls — Materials/Plant/Sublet 6610850
- 220: Duration Basis: PRJ-001 — hist-prj-001-act-153 — Roof Waterproofing Membrane Installation, 1,200m2, 8d, 4 persons x 1 crew. / Notes: BOQ Section D total selling value mapped to envelope package; grouped. / Expenses: Building envelope — cladding, roof, louvres, doors, airtightness and roof access — Materials/Plant/Sublet 5544000
- 240: Duration Basis: PRJ-001 — hist-prj-001-act-168 — Riser Piping — Heating & Cooling Mains, 600lm, 20d, 6 persons x 2 crews. / Notes: F.06 exact 2,850m. Historical PRJ-001 analogue 600lm/20d/(6×2)=2.5lm/person-day; 12 workers install 30m/d. 2,850/30=95d ×1.15 =109.25 →110wd. / Expenses: Chilled-water pipework installation and pressure test — Materials/Plant/Sublet 1889088
- 420: Duration Basis: PRJ-001 — hist-prj-001-act-172 — Chiller / Cooling Plant Installation 5wd LS; proxy.
- 430: Duration Basis: PRJ-001 — hist-prj-001-act-172 — Chiller installation 5wd LS proxy.
- 440: Duration Basis: PRJ-001 — hist-prj-001-act-172 — Plant installation LS proxy; no CRAH-specific analogue.
- 450: Duration Basis: PRJ-001 — hist-prj-001-act-172 — Plant installation LS proxy.
- 460: Duration Basis: PRJ-001 — hist-prj-001-act-169 — HVAC ductwork lower floors 20wd LS; proxy. / Notes: Ancillary ventilation/smoke extract belongs with mechanical installation before integrated commissioning, not after Whole Works TO. predecessor of activity 470 and 300; activity moved to be a pre-handover scope. / Expenses: Ancillary ventilation/smoke extract (F.10) — Materials/Plant/Sublet 2496403
- 470: Duration Basis: PRJ-001 — hist-prj-001-act-172 — Plant installation LS proxy. / Expenses: Water treatment, insulation, flushing/balancing (F.11/F.12) — Materials/Plant/Sublet 1945473

| ID | WBS | Activity | Duration | Start | Finish | Predecessors | Total float | Free float | Resources | Cost |
| --- | --- | --- | --- | --- | --- | --- | --- | --- | --- | --- |
|  | 2 | **Waste heat plant** |  | 2028-01-10 | 2028-09-01 |  |  |  |  |  |
| 480 |  | Waste-heat plant installation & connection (F.08) | 20d | 2028-01-10 | 2028-02-04 | 220, 410 | 264d | 0d | Mechanical Plant Crew [640 h] |  |
| 250 |  | Mechanical plant install — chillers, dry coolers, CRAH, pumps, vessels and heat recovery | 35d | 2028-07-17 | 2028-09-01 | 470, 220, 90 | 0d |  | Mechanical Plant Crew [3360 h] | 2,134,854.83 |
|  | 3 | **Boundary piping** |  | 2028-01-10 | 2028-03-31 |  |  |  |  |  |
| 490 |  | Waste-heat boundary pipe installation — 260m (F.09) | 10d | 2028-01-10 | 2028-01-21 | 220, 410 | 274d | 10d | Mechanical Pipework Crew [480 h] | 322,294.21 |
| 260 |  | Waste-heat recovery plant and DH boundary pipework installation | 40d | 2028-02-07 | 2028-03-31 | 480, 490, 110 | 264d | 0d | Mechanical Commissioning [1280 h] | 3,753,212.53 |
|  | 4 | **District heating seasonal acceptance** |  | 2028-04-03 | 2028-04-26 |  |  |  |  |  |
| 371 |  | Waste-heat 72-hour witnessed acceptance test (heating season, with 20wd notice) | 16d | 2028-04-03 | 2028-04-26 | 260 | 264d | 234d | Mechanical Commissioning [512 h] |  |
|  | 9 | **9** |  | 2028-01-10 | 2028-06-22 |  |  |  |  |  |
|  | 1 | **Electrical systems** |  | 2028-01-10 | 2028-06-22 |  |  |  |  |  |
| 270 |  | Power distribution, UPS, switchboards and busway — electrical installation | 65d | 2028-03-20 | 2028-06-22 | 510, 520, 530, 570, 580, 590, 600, 610, 620, 630, 220 | 50d |  | Electrical Crew [8320 h] |  |
|  | 1 | **Grid termination** |  | 2028-01-10 | 2028-01-28 |  |  |  |  |  |
| 510 |  | 110kV termination/metering/protection (G.02) | 15d | 2028-01-10 | 2028-01-28 | 500, 220 | 85d | 35d | Electrical Crew [480 h] |  |
|  | 2 | **RMU** |  | 2028-01-10 | 2028-01-28 |  |  |  |  |  |
| 520 |  | 20kV ring-main switchboards — 14 panels (G.03) | 15d | 2028-01-10 | 2028-01-28 | 500, 220 | 85d | 35d | Electrical Crew [480 h] |  |
|  | 3 | **Substations** |  | 2028-01-10 | 2028-02-04 |  |  |  |  |  |
| 530 |  | Hall substations — 4 no. (G.04) | 20d | 2028-01-10 | 2028-02-04 | 500, 220 | 80d | 30d | Electrical Crew [640 h] |  |
|  | 2 | **Electrical systems** |  | 2028-01-10 | 2028-03-10 |  |  |  |  |  |
| 280 |  | Standby generator installation, testing & integrated fuel systems | 25d | 2028-02-07 | 2028-03-10 | 540, 550, 560, 220 | 205d |  | Electrical Crew [2400 h] |  |
|  | 1 | **Generator controls** |  | 2028-01-10 | 2028-02-04 |  |  |  |  |  |
| 550 |  | Generator controls/ATS/paralleling install (G.06) | 20d | 2028-01-10 | 2028-02-04 | 540, 220 | 205d | 0d | Electrical Crew [640 h] |  |
|  | 2 | **Fuel system** |  | 2028-01-10 | 2028-01-28 |  |  |  |  |  |
| 560 |  | Fuel storage/bunding/day tanks (G.07) | 15d | 2028-01-10 | 2028-01-28 | 220 | 210d | 5d | Mechanical Plant Crew [480 h] |  |
|  | 3 | **Battery systems** |  | 2028-01-10 | 2028-02-04 |  |  |  |  |  |
| 580 |  | Battery systems — 4 no. (G.09) | 20d | 2028-01-10 | 2028-02-04 | 570, 220 | 80d | 30d | Electrical Crew [640 h] |  |

Notes:
- 480: Duration Basis: PRJ-005 — hist-prj-005-act-98 — DH substation manufacturing 30wd LS; process proxy.
- 250: Duration Basis: PRJ-001 — hist-prj-001-act-172 — Chiller / Cooling Plant Installation, 5 working days, 1 LS; direct duration proxy for installation only. / Notes: F.07 valve/instrumentation value not allocated to its own scope row in this schedule; include in unmapped BOQ gap (EUR 2,134,854.83). / Expenses: Mechanical plant install — chillers, dry coolers, CRAH, pumps, vessels and heat recovery — Materials/Plant/Sublet 2134855
- 490: Duration Basis: PRJ-001 — hist-prj-001-act-168 — Riser piping 600lm/20wd/12-person crew; proxy. / Expenses: Waste-heat boundary pipe installation — 260m (F.09) — Materials/Plant/Sublet 322294
- 260: Duration Basis: PRJ-005 — hist-prj-005-act-98 — DH substation tender/award/manufacturing activity; durations are not commissioning productivity. / Notes: Waste-heat plant install and boundary coordination; the Oct-Apr witnessed acceptance (72h) and 20d notice are separate constraint. / Expenses: Waste-heat recovery plant and DH boundary pipework installation — Materials/Plant/Sublet 3753213
- 371: Duration Basis: PRJ-005 — hist-prj-005-act-98 — Direct DH substation process analog 30wd; test window 72h is stated, 20wd notice stated in agreement. / Notes: 72-hour witnessed test plus 20 working days' notice is expressly stated; duration 16d is inadequate to represent notice + test. Separate notice activity should precede the eligible October-April test window; retained 16d as planning allowance is not calendar-correct.
- 270: Duration Basis: PRJ-001 — hist-prj-001-act-43 — MV/LV Power Distribution Design, 8d LS; design-duration proxy, not electrical installation productivity. / Notes: Remaining G.02-G.04/G.06-G.15 values are explicitly assigned to individual activity rows; zero duplicate allocation on the aggregate electrical node.
- 510: Duration Basis: PRJ-001 — hist-prj-001-act-180 — Transformer/MV room installation 5d LS; proxy.
- 520: Duration Basis: PRJ-001 — hist-prj-001-act-107 — Switchgear manufacture/FAT 40d; installation proxy. / Notes: RMU installation follows transformer availability and the building/enclosure readiness.
- 530: Duration Basis: PRJ-001 — hist-prj-001-act-180 — MV switchgear room installation 5d LS; proxy.
- 280: Duration Basis: PRJ-005 — hist-prj-005-act-203 — Emergency Generator & UPS Installation, 3d LS; not directly comparable scale. / Notes: G.05 generator equipment value is included in G.01-G.15 total loaded once in activity 270; installation is represented separately in logic/resource but no duplicated package cost.
- 550: Duration Basis: PRJ-001 — hist-prj-001-act-182 — Generator & UPS installation 3d LS; proxy. / Notes: Generator controls/ATS installation follows delivery and weathertight electrical areas.
- 560: Duration Basis: PRJ-001 — hist-prj-001-act-182 — Generator install 3d LS; proxy.
- 580: Duration Basis: PRJ-001 — hist-prj-001-act-182 — Generator/UPS installation LS proxy. / Notes: Install only after UPS delivered and building is weathertight.

| ID | WBS | Activity | Duration | Start | Finish | Predecessors | Total float | Free float | Resources | Cost |
| --- | --- | --- | --- | --- | --- | --- | --- | --- | --- | --- |
|  | 4 | **LV boards** |  | 2028-01-10 | 2028-02-04 |  |  |  |  |  |
| 590 |  | LV main switchboards/distribution — 8 no. (G.10) | 20d | 2028-01-10 | 2028-02-04 | 500, 220 | 50d | 0d | Electrical Crew [640 h] |  |
|  | 5 | **Busway** |  | 2028-02-07 | 2028-03-10 |  |  |  |  |  |
| 600 |  | Overhead busway to rack PDUs — 960m (G.11) | 25d | 2028-02-07 | 2028-03-10 | 590 | 55d | 5d | Electrical Crew [2400 h] |  |
|  | 6 | **Containment** |  | 2028-02-07 | 2028-03-17 |  |  |  |  |  |
| 610 |  | Containment/cabling/small power/lighting (G.12) | 30d | 2028-02-07 | 2028-03-17 | 590 | 50d | 0d | Electrical Crew [2880 h] |  |
|  | 7 | **Earthing** |  | 2028-01-10 | 2028-02-04 |  |  |  |  |  |
| 620 |  | Earthing, bonding/lightning protection (G.13) | 20d | 2028-01-10 | 2028-02-04 | 220, 500 | 80d | 30d | Electrical Crew [1280 h] |  |
|  | 8 | **Metering** |  | 2028-02-07 | 2028-02-25 |  |  |  |  |  |
| 630 |  | Energy metering per hall/feed (G.14) | 15d | 2028-02-07 | 2028-02-25 | 590 | 65d | 15d | Electrical Crew [480 h] |  |
|  | 10 | **10** |  | 2028-01-10 | 2029-01-03 |  |  |  |  |  |
|  | 1 | **Smoke detection** |  | 2028-01-10 | 2029-01-03 |  |  |  |  |  |
| 640 |  | Aspirating smoke detection — 5,000m2 (H.01) | 20d | 2028-01-10 | 2028-02-04 | 220 | 150d | 0d | Fire Detection Crew [1280 h] | 191,178.34 |
| 290 |  | Fire suppression, detection, BMS/DCIM, access control, CCTV and structured cabling | 55d | 2028-10-16 | 2029-01-03 | 640, 650, 660, 670, 680, 690, 700, 710, 720, 220 | 0d |  | Systems Installation Crew [7040 h] | 148,019.42 |
|  | 2 | **Fire alarm** |  | 2028-01-10 | 2028-02-04 |  |  |  |  |  |
| 650 |  | Addressable fire detection/alarm — 9,450m2 (H.02) | 20d | 2028-01-10 | 2028-02-04 | 220 | 175d | 90d | Fire Detection Crew [1280 h] | 219,938.22 |
|  | 3 | **Suppression** |  | 2028-02-07 | 2028-03-10 |  |  |  |  |  |
| 660 |  | Gaseous/water-mist suppression — 4 halls (H.03) | 25d | 2028-02-07 | 2028-03-10 | 640 | 150d |  | Fire Protection Crew [2400 h] | 1,280,063.7 |
|  | 4 | **Sprinkler** |  | 2028-01-10 | 2028-02-11 |  |  |  |  |  |
| 670 |  | Sprinkler/dry risers — 9,450m2 (H.04) | 25d | 2028-01-10 | 2028-02-11 | 220 | 170d |  | Fire Protection Crew [2400 h] | 267,067.83 |
|  | 5 | **BMS** |  | 2028-09-04 | 2028-10-13 |  |  |  |  |  |
| 680 |  | BMS field devices, panels, BACnet integration (H.05) | 30d | 2028-09-04 | 2028-10-13 | 250, 270 | 0d |  | BMS Controls Crew [1920 h] | 980,828.03 |
|  | 6 | **DCIM** |  | 2028-09-04 | 2028-10-13 |  |  |  |  |  |
| 690 |  | DCIM per-hall power/cooling/environmental reporting (H.06) | 30d | 2028-09-04 | 2028-10-13 | 250, 270 | 0d |  | BMS Controls Crew [1920 h] | 531,974.52 |

Notes:
- 590: Duration Basis: PRJ-001 — hist-prj-001-act-181 — Main LV switchgear installation 3d LS; proxy.
- 600: Duration Basis: PRJ-001 — hist-prj-001-act-181 — Electrical installation proxy; no busway analog.
- 610: Duration Basis: PRJ-001 — hist-prj-001-act-185 — Distribution boards install 10d LS; proxy.
- 620: Duration Basis: PRJ-001 — hist-prj-001-act-181 — LV distribution installation proxy.
- 630: Duration Basis: PRJ-001 — hist-prj-001-act-185 — Distribution board installation proxy.
- 640: Duration Basis: PRJ-001 — hist-prj-001-act-188 — Fire alarm/detection install 15d LS; proxy. / Expenses: Aspirating smoke detection — 5,000m2 (H.01) — Materials/Plant/Sublet 191178
- 290: Duration Basis: PRJ-001 — hist-prj-001-act-175 — Fire Sprinkler System Installation, 20d LS; proxy duration only. / Notes: Combined BOQ sections E+H selling value; finishes/containment and ELV/fire/controls grouped. For section reconciliation only; not line-level. / Expenses: Fire suppression, detection, BMS/DCIM, access control, CCTV and structured cabling — Materials/Plant/Sublet 148019
- 650: Duration Basis: PRJ-001 — hist-prj-001-act-188 — Fire alarm/detection install 15d LS; proxy. / Expenses: Addressable fire detection/alarm — 9,450m2 (H.02) — Materials/Plant/Sublet 219938
- 660: Duration Basis: PRJ-001 — hist-prj-001-act-115 — Suppression equipment procurement 20wd LS; installation proxy. / Expenses: Gaseous/water-mist suppression — 4 halls (H.03) — Materials/Plant/Sublet 1280064
- 670: Duration Basis: PRJ-001 — hist-prj-001-act-175 — Fire sprinkler installation 20d LS; proxy. / Expenses: Sprinkler/dry risers — 9,450m2 (H.04) — Materials/Plant/Sublet 267068
- 680: Duration Basis: PRJ-001 — hist-prj-001-act-220 — BMS/BAS integrated test 8d; install proxy. / Expenses: BMS field devices, panels, BACnet integration (H.05) — Materials/Plant/Sublet 980828
- 690: Duration Basis: PRJ-001 — hist-prj-001-act-220 — BMS/BAS integrated test 8d; DCIM proxy. / Expenses: DCIM per-hall power/cooling/environmental reporting (H.06) — Materials/Plant/Sublet 531975

| ID | WBS | Activity | Type | Duration | Start | Finish | Predecessors | Total float | Free float | Resources | Cost |
| --- | --- | --- | --- | --- | --- | --- | --- | --- | --- | --- | --- |
|  | 7 | **Access** |  |  | 2028-01-10 | 2028-02-04 |  |  |  |  |  |
| 700 |  | Access control/mantraps/ANPR (H.07) |  | 20d | 2028-01-10 | 2028-02-04 | 220 | 175d |  | Security Crew [640 h] | 598,471.34 |
|  | 8 | **CCTV** |  |  | 2028-01-10 | 2028-02-04 |  |  |  |  |  |
| 710 |  | CCTV 90-day retention/analytics (H.08) |  | 20d | 2028-01-10 | 2028-02-04 | 220 | 175d |  | Security Crew [640 h] | 465,477.71 |
|  | 9 | **Structured cabling** |  |  | 2028-01-10 | 2028-02-11 |  |  |  |  |  |
| 720 |  | Structured cabling, meet-me room and containment (H.09) |  | 25d | 2028-01-10 | 2028-02-11 | 220 | 170d |  | ICT Crew [1600 h] | 398,980.89 |
|  | 11 | **11** |  |  | 2028-06-16 | 2029-07-12 |  |  |  |  |  |
|  | 1 | **Finishes** |  |  | 2028-06-16 | 2029-03-07 |  |  |  |  |  |
| 730 |  | Data-hall containment/admin and plant finishes (E.01-E.08) |  | 45d | 2028-06-16 | 2028-08-18 | 240, 640, 650 | 95d |  | Fit-Out Crew [4320 h] | 4,620,000.01 |
| 300 |  | Hall 1 integrated L4/L5 testing, tenant access and occupancy inspection |  | 45d | 2029-01-04 | 2029-03-07 | 250, 270, 280, 290, 100, 730, 460 | 0d |  | Commissioning Team [2160 h] | 578,789.53 |
|  | 3 | **Section 2 commissioning & handover** |  |  | 2029-02-15 | 2029-04-18 |  |  |  |  |  |
| 320 |  | Section 2 fitout and commissioning works |  | 45d | 2029-02-15 | 2029-04-18 | 300 SS+30d, 250, 270, 280, 290, 730, 460 | 60d | 0d | Commissioning Team [2160 h] | 578,789.53 |
|  | 5 | **Section 1 Taking Over** |  |  | 2029-03-08 | 2029-07-12 |  |  |  |  |  |
| 310 |  | Section 1 Taking Over | milestone | 0d | 2029-03-08 | 2029-03-08 | 300 | 91d |  | Project Management |  |
| 340 |  | Section 3 fitout, systems testing and waste-heat seasonal acceptance |  | 45d | 2029-03-29 | 2029-05-30 | 300 SS+60d, 250, 270, 280, 290, 371, 730, 460 | 30d | 0d | Commissioning Team [2160 h] | 578,789.53 |
| 735 |  | Sectional commissioning and handover integrated work-package controls |  | 1d | 2029-07-12 | 2029-07-12 | 300, 320, 340, 372, 360, 460, 80 | 0d |  | Commissioning Manager [8 h] |  |
|  | 6 | **Section 2 Taking Over** |  |  | 2029-04-19 | 2029-04-19 |  |  |  |  |  |
| 330 |  | Section 2 Taking Over | milestone | 0d | 2029-04-19 | 2029-04-19 | 320 | 61d |  | Project Management |  |
|  | 7 | **Section 4 commissioning & handover** |  |  | 2029-05-10 | 2029-07-11 |  |  |  |  |  |
| 372 |  | Section 4 fitout, integrated test, statutory inspection & Taking Over |  | 45d | 2029-05-10 | 2029-07-11 | 300 SS+90d, 250, 270, 280, 290, 730, 460 | 0d |  | Commissioning Team [2160 h] | 578,789.53 |
| 350 |  | Section 3 Taking Over | milestone | 0d | 2029-05-31 | 2029-05-31 | 340 | 31d |  | Project Management |  |
|  | 8 | **Section 4 Taking Over** |  |  | 2029-07-12 | 2029-07-12 |  |  |  |  |  |
| 373 |  | Section 4 Taking Over | milestone | 0d | 2029-07-12 | 2029-07-12 | 372 | 1d |  | Project Management |  |
|  | 12 | **12** |  |  | 2028-01-10 | 2029-07-13 |  |  |  |  |  |
|  | 2 | **External works & closeout** |  |  | 2028-01-10 | 2029-07-13 |  |  |  |  |  |
| 360 |  | External works, landscaping and final site completion |  | 25d | 2028-01-10 | 2028-02-11 | 230, 220 | 360d |  | Civil Crew [1200 h] | 2,984,469.93 |
| 370 |  | Whole Works Final Completion | milestone | 0d | 2029-07-13 | 2029-07-13 | 310, 330, 350, 373, 360, 735, 460 | 0d |  | Project Management |  |

Notes:
- 700: Duration Basis: PRJ-001 — hist-prj-001-act-189 — Security/access/CCTV install 10d LS; proxy. / Expenses: Access control/mantraps/ANPR (H.07) — Materials/Plant/Sublet 598471
- 710: Duration Basis: PRJ-001 — hist-prj-001-act-189 — Security/access/CCTV install 10d LS; proxy. / Expenses: CCTV 90-day retention/analytics (H.08) — Materials/Plant/Sublet 465478
- 720: Duration Basis: PRJ-001 — hist-prj-001-act-189 — ICT system installation proxy. / Expenses: Structured cabling, meet-me room and containment (H.09) — Materials/Plant/Sublet 398981
- 730: Duration Basis: PRJ-001 — hist-prj-001-act-203 — Raised access flooring 3,500m2/10d/6-person crew; proxy. / Notes: All Section E value assigned; design allowance E.08 also embedded, coarse grouping. / Expenses: Data-hall containment/admin and plant finishes (E.01-E.08) — Materials/Plant/Sublet 4620000
- 300: Duration Basis: PRJ-001 — hist-prj-001-act-215 — HVAC Commissioning, Balancing & Air Volume Testing, 10d LS; duration proxy, data-centre integrated load testing is an allowance. / Notes: Section J total is assigned to this commissioning package. This is a gross sell-value lump, not separate per-section cost. Activity-level J.03/J.04/J.07 section split is unallocated; included in BOQ gap statement. / Expenses: Hall 1 integrated L4/L5 testing, tenant access and occupancy inspection — Materials/Plant/Sublet 578790
- 320: Duration Basis: PRJ-002 — hist-prj-002-act-214 — Office commissioning activity 12d LS; proxy only. / Notes: Sectional package shares installed plant systems; activity duration assumption 25d. / Expenses: Section 2 fitout and commissioning works — Materials/Plant/Sublet 578790
- 310: Notes: First of four statutory inspections, split equally from J.07 four-section sum.
- 340: Duration Basis: PRJ-001 — hist-prj-001-act-220 — BMS/BAS Integrated Functional Testing 8d LS; data-centre integrated systems test is a scope-uplift assumption. / Notes: Risk: if first viable Oct-Apr test window missed after Aug 31 boundary availability, acceptance slips to next heating season. / Expenses: Section 3 fitout, systems testing and waste-heat seasonal acceptance — Materials/Plant/Sublet 578790
- 735: Duration Basis: PRJ-001 — hist-prj-001-act-220 — BMS integrated functional testing 8wd; coordination placeholder.
- 330: Notes: Target 2027-07-02; unconstrainted.
- 372: Duration Basis: PRJ-001 — hist-prj-001-act-220 — BMS/BAS integrated functional testing 8wd, LS; office proxy. / Notes: Section 4 fitout/test package separated from whole-works milestone. Duration is section commissioning allowance, no compression. / Expenses: Section 4 fitout, integrated test, statutory inspection & Taking Over — Materials/Plant/Sublet 578790
- 350: Notes: Section 3 TO milestone; its L4/L5/inspection cost resides in commissioning activities.
- 373: Notes: Contract milestone target 2028-01-02 from PDC-SC-001.
- 360: Duration Basis: PRJ-001 — hist-prj-001-act-161 — Parking Area Base Course, Paving & Markings, 2,000m2, 10d, 6 members x1 crew; derived rate 33.33m2/person-day. / Notes: Section I total mapped as one package; only quantities for B/I physical activities known. All I.01-I.09 amount is tender value, not actual cost. / Expenses: External works, landscaping and final site completion — Materials/Plant/Sublet 2984470
- 370: Notes: Whole Works Final Completion follows all four Sections, and external works. Contract target 2028-01-02. The legacy reference is not constrained.

| ID | WBS | Activity | Type | Duration | Start | Finish | Predecessors | Total float | Resources |
| --- | --- | --- | --- | --- | --- | --- | --- | --- | --- |
|  | 13 | **13** |  |  | 2029-07-13 | 2029-07-13 |  |  |  |
|  | 1 | **Explicit schedule contingency** |  |  | 2029-07-13 | 2029-07-13 |  |  |  |
| 736 |  | Project contingency reserve recorded outside CPM network | milestone | 0d | 2029-07-13 | 2029-07-13 | 370 | 0d | Schedule Contingency |

Notes:
- 736: Duration Basis: PRJ-001 — hist-prj-001-act-1 — Separate risk allowance, not a productivity-derived task; 220 working days is rounded explicit buffer using the external reference-class p10 of 10.2 months at 21.6 workdays/month. / Notes: Reference-class p10 reserve recommendation is outside the CPM planned finish; the user requested a draft P50/P90, not changing logic/durations. Keep as zero-duration reserve marker only. Do not count it as a time buffer.
