# Polaris DC-1 — Aviapolis Data Campus Phase 1, Vantaa (Baseline CPM Programme Rev 0)

Schedule from Primavera P6, 2026-03-02 to 2027-12-23, data date 2026-03-02, costs in EUR.
Must finish by 2027-12-23

## Calendars

- Site construction: Mon-Fri, Finnish holidays, summer shutdown wk 28-30: Mon-Fri 08:00-12:00, 13:00-17:00; Sat-Sun off. Exceptions (off unless hours are given): 2026-04-03, 2026-04-06, 2026-05-01, 2026-05-14, 2026-06-19, 2026-07-06 to 2026-07-24, 2026-12-24 to 2026-12-25, 2027-01-01, 2027-01-06, 2027-03-26, 2027-03-29, 2027-05-06, 2027-06-25, 2027-07-12 to 2027-07-30, 2027-12-06.

## Resources

| Resource | Group |
| --- | --- |
| Design Management | labor |
| MEP Design | labor |
| Site Management | labor |
| Geotechnical Consultant | labor |
| DNO (third party) | labor |
| Offtaker (third party) | labor |
| Procurement | labor |
| Contingency (cost only) | labor |
| Vendor (Transformer Manufacturer) | labor |
| Architectural Design | labor |
| Structural Design | labor |
| Site Establishment Crew | labor |
| Security Guards | labor |
| Engineer review (Employer) | labor |
| Earthworks Crew | labor |
| Environmental Crew | labor |
| Vendor (Precast Factory) | labor |
| Vendor (Steel Fabricator) | labor |
| Vendor (BMS Supplier) | labor |
| Vendor (Suppression Supplier) | labor |
| Vendor (Louvre Manufacturer) | labor |
| Vendor (Facade Fabricator) | labor |
| Civil Crew | labor |
| Vendor (Chiller Manufacturer) | labor |
| Vendor (Dry Cooler Manufacturer) | labor |
| Vendor (CRAH Manufacturer) | labor |
| Vendor (WHR Manufacturer) | labor |
| Vendor (Generator Manufacturer) | labor |
| Vendor (UPS Manufacturer) | labor |
| Vendor (Busway Manufacturer) | labor |
| Blasting Crew | labor |
| Vendor (Switchgear Manufacturer) | labor |
| Concrete Crew | labor |
| Piling Crew | labor |
| Facade Crew | labor |
| Structural Steel Crew | labor |
| Crane Crew | labor |
| Steel & Precast Crew | labor |
| Fit-Out Crew | labor |
| Waterproofing Crew | labor |
| BMS Crew | labor |
| Mechanical Crew | labor |
| Electrical Crew | labor |
| Fire Protection Crew | labor |
| Insulation Crew | labor |
| Commissioning Team | labor |
| Landscaping Crew | labor |
| Contingency (time) | labor |

## Schedule

| ID | WBS | Activity | Type | Duration | Start | Finish | Predecessors | Total float | Free float | Resources |
| --- | --- | --- | --- | --- | --- | --- | --- | --- | --- | --- |
|  | 1 | **Project milestones** |  |  | 2026-03-02 | 2027-12-23 |  |  |  |  |
| 100 |  | Commencement Date — Project Start (2026-03-02) | milestone | 0d | 2026-03-02 | 2026-03-02 |  | 0d |  |  |
| 9900 |  | Time for Completion — whole of the Works (Section 4 taking-over) | milestone | 0d | 2027-12-23 | 2027-12-23 | 4260, 8010 FF, 8020 FF, 8030 FF, 8040 FF, 8050 FF, 8060 FF, 1260, 2260, 3260 | 0d |  |  |
|  | 2 | **Design & approvals** |  |  | 2026-03-02 | 2026-06-30 |  |  |  |  |
| 210 |  | Design team mobilisation & BIM framework setup |  | 10d | 2026-03-02 | 2026-03-13 | 100 | 5d | 0d | Design Management [320 h] |
| 280 |  | HV single-line, protection-study pack & DNO submission (early pack) |  | 15d | 2026-03-02 | 2026-03-20 | 100 | 25d | 0d | MEP Design [360 h] |
| 220 |  | Concept & schematic design — S1 design submission |  | 15d | 2026-03-16 | 2026-04-07 | 210 | 27d | 0d | Architectural Design [600 h] |
| 240 |  | Geotechnical review & foundation system design |  | 18d | 2026-03-16 | 2026-04-10 | 210 | 83d | 27d | Structural Design [432 h] |
| 250 |  | Steel frame & deck design incl. structural IFC (halls + spine) |  | 33d | 2026-03-16 | 2026-05-04 | 210 | 5d | 0d | Structural Design [792 h] |
| 260 |  | Precast wall panel design & production drawings approval |  | 21d | 2026-03-30 | 2026-04-29 | 250 SS+10d | 28d | 0d | Structural Design [336 h] |
| 230 |  | Engineer review of S1 submission (SP-20: 14 calendar days) |  | 10d | 2026-04-08 | 2026-04-21 | 220 | 215d | 27d | Engineer review (Employer) [80 h] |
| 270 |  | Envelope design development (cladding, roof, louvres) |  | 30d | 2026-04-08 | 2026-05-21 | 220 | 27d | 0d | Architectural Design [1200 h] |
| 281 |  | Remaining electrical design (LV, UPS, generators, containment) |  | 37d | 2026-04-08 | 2026-06-01 | 220 | 47d | 0d | MEP Design [888 h] |
| 290 |  | Mechanical / cooling design (chillers, CRAH, CHW, WHR) |  | 30d | 2026-04-08 | 2026-05-21 | 220 | 66d | 0d | MEP Design [720 h] |
| 295 |  | Fire engineering, BMS/DCIM, security & ELV design |  | 29d | 2026-04-08 | 2026-05-20 | 220 | 157d | 0d | MEP Design [696 h] |
| 300 |  | Compile S2 detailed design submission |  | 5d | 2026-06-02 | 2026-06-08 | 240, 250, 270, 280, 290, 295, 230, 281 | 188d | 0d | Design Management [120 h] |
| 305 |  | Engineer review of S2 submission (SP-20: 21 calendar days) |  | 15d | 2026-06-09 | 2026-06-30 | 300 | 188d | 49d | Engineer review (Employer) [120 h] |
|  | 3 | **Statutory permits & third-party dates** |  |  | 2026-03-02 | 2027-09-30 |  |  |  |  |
| 320 |  | Statutory supervisors & responsible site manager appointed / approved (permit pre-start) |  | 10d | 2026-03-02 | 2026-03-13 | 100 | 14d | 0d | Site Management [240 h] |
| 330 |  | Pre-condition survey of neighbours + blasting permit (rescue authority) |  | 20d | 2026-03-02 | 2026-03-27 | 100 | 66d | 0d | Geotechnical Consultant [640 h] |
| 340 |  | Crane aviation clearance (21 days per crane location) |  | 15d | 2026-03-02 | 2026-03-20 | 100 | 106d | 101d | Site Management [120 h] |
| 350 |  | DNO: earliest firm energisation date 2027-03-12 (stated third-party date, held as duration) |  | 246d | 2026-03-02 | 2027-03-12 | 100 | 50d | 25d | DNO (third party) [1968 h] |
| 360 |  | Offtaker boundary-side DH works complete (2027-08-31, stated) |  | 349d | 2026-03-02 | 2027-08-31 | 100 | 22d |  | Offtaker (third party) [2792 h] |
| 361 |  | DH heating season opens (Oct-Apr only; 2027-10-01) |  | 371d | 2026-03-02 | 2027-09-30 | 100 | 0d |  | Offtaker (third party) [2968 h] |
| 325 |  | Start notice (aloitusilmoitus) >=7 days before site works |  | 5d | 2026-03-16 | 2026-03-20 | 320 | 14d | 0d | Site Management [40 h] |
| 285 |  | DNO design review & protection-study approval (20 working days) |  | 20d | 2026-03-23 | 2026-04-21 | 280 | 199d | 0d | DNO (third party) [160 h] |
| 345 |  | Securities lodged & commencement inspection (>=5 wd notice) |  | 7d | 2026-03-23 | 2026-03-31 | 325 | 22d | 8d | Site Management [112 h] |
| 335 |  | Neighbour notice 7 days before first blast |  | 5d | 2026-03-30 | 2026-04-07 | 330 | 66d | 52d | Site Management [40 h] |
| 355 |  | DNO outage notice: 16 weeks written notice of energisation date |  | 62d | 2026-04-22 | 2026-08-11 | 285 | 199d | 174d | DNO (third party) [496 h] |

Notes:
- 100: Notes: [M] Commencement Date PDC-SC-001
- 9900: Notes: [M] contract 2028-01-02
- 210: Duration Basis: hist-prj-001-act-1 / Notes: [C] analog Design Team Mobilization 10d (no quantity)
- 280: Duration Basis: hist-prj-001-act-43 / Notes: [E] office MEP analogs (MV/LV design 8d, IFC 8d, demand 5d...) scaled x1.5 for 10 MW HV — judgement, UNGROUNDED scale
- 220: Duration Basis: hist-prj-001-act-12 / Notes: [C] analog Concept Design 15d (no quantity)
- 240: Duration Basis: hist-prj-001-act-25 / Notes: [C] analog Foundation Recommendation Review 5d + Foundation System Design 10d +15%
- 250: Duration Basis: hist-prj-004-act-31 / Notes: [C] analog Steel Frame & Composite Deck Design 20d + Structural IFC 8d +15%
- 260: Duration Basis: hist-prj-001-act-30 / Notes: [C] analog Precast specs 8d + Production Drawings Approval 10d +15%
- 230: Notes: [D] PDC-PC-001 Rev C SP-20: S1 review 14 cal d = 10 wd
- 270: Duration Basis: hist-prj-001-act-15 / Notes: [C] analog Design Development / Detailed Design 30d
- 281: Duration Basis: hist-prj-001-act-43 / Notes: [E] office MEP analogs scaled x1.5 for 10 MW — judgement
- 290: Duration Basis: hist-prj-001-act-36 / Notes: [C] analog Cooling System Design 8d + Load Analysis 8d + Mech IFC 8d; +25% first-of-kind
- 295: Duration Basis: hist-prj-001-act-57 / Notes: [C] analog Fire Safety Engineering 10d + BMS Design 10d + Fire Alarm design
- 300: Notes: [C] compile/issue only; analog IFC package preparation halved
- 305: Notes: [D] PDC-PC-001 Rev C SP-20: S2 review 21 cal d = 15 wd
- 320: Notes: [E] PDC-PP-001 pre-start condition; duration not stated — judgement, UNGROUNDED
- 330: Notes: [C] PDC-SCH-001 permit task 20d; analog permit prep 20d
- 340: Notes: [D] PDC-PP-001: 21 d = 15 wd
- 350: Notes: [D] PDC-GC-001 s7.5: no commissioning power before 2027-03-12. Duration = weekdays Commencement->2027-03-12; NOT a constraint
- 360: Notes: [D] PDC-DH-001 interface date 2027-08-31, held as duration from Commencement
- 361: Notes: [D] PDC-DH-001 s6.3 heating-season test window Oct-Apr
- 325: Notes: [D] PDC-PP-001: 7 days = 5 wd
- 285: Notes: [D] PDC-GC-001 s6.3: DNO review 20 working days
- 345: Notes: [C] PDC-PP-001: securities (landscape 85k, stormwater 60k) + 5 wd notice + 2
- 335: Notes: [D] PDC-PP-001 blasting: 7 d notice = 5 wd
- 355: Notes: [D] PDC-GC-001 s7.3: 16 weeks

| ID | WBS | Activity | Duration | Start | Finish | Predecessors | Total float | Free float | Resources | Cost |
| --- | --- | --- | --- | --- | --- | --- | --- | --- | --- | --- |
|  | 4 | **Procurement & long-lead items** |  | 2026-03-02 | 2027-03-19 |  |  |  |  |  |
| 410 |  | Subcontract evaluation & award — TP-001 earthworks/blasting/substructure | 5d | 2026-03-02 | 2026-03-06 | 100 | 39d | 25d | Procurement [120 h] |  |
| 411 |  | Subcontract evaluation & award — TP-002 steel & precast | 15d | 2026-03-02 | 2026-03-20 | 100 | 33d | 26d | Procurement [360 h] |  |
| 412 |  | Subcontract evaluation & award — TP-003 facade & envelope | 20d | 2026-03-02 | 2026-03-27 | 100 | 62d | 35d | Procurement [480 h] |  |
| 413 |  | Subcontract evaluation & award — TP-004 interiors | 15d | 2026-03-02 | 2026-03-20 | 100 | 271d | 116d | Procurement [360 h] |  |
| 414 |  | Subcontract evaluation & award — TP-005 mechanical | 20d | 2026-03-02 | 2026-03-27 | 100 | 101d | 35d | Procurement [480 h] |  |
| 415 |  | Subcontract evaluation & award — TP-006 electrical | 20d | 2026-03-02 | 2026-03-27 | 100 | 80d | 42d | Procurement [480 h] |  |
| 416 |  | Subcontract evaluation & award — TP-007 ELV/BMS/security | 20d | 2026-03-02 | 2026-03-27 | 100 | 191d | 34d | Procurement [480 h] |  |
| 417 |  | Subcontract evaluation & award — TP-008 external works | 10d | 2026-03-02 | 2026-03-13 | 100 | 286d | 67d | Procurement [240 h] |  |
| 420 |  | Transformers: technical release & purchase order (early-order assumption at Commencement) | 5d | 2026-03-02 | 2026-03-06 | 100 | 25d | 0d | Procurement [80 h] |  |
| 425 |  | Transformers 2 nr 110/20 kV 16 MVA — manufacture & delivery (LT-01: 52 weeks) | 236d | 2026-03-09 | 2027-03-05 | 420 | 25d | 0d | Vendor (Transformer Manufacturer) [7552 h] | 2,194,669.01 |
| 470 |  | Precast wall panels batch A (Hall 1 + spine) — production & delivery (LT: 16 weeks) | 62d | 2026-04-30 | 2026-08-19 | 411, 260 | 28d | 0d | Vendor (Precast Factory) [7440 h] | 1,216,134.42 |
| 465 |  | Structural steel batch A (Hall 1 + spine) — fabrication & delivery (LT: 18 weeks from released design) | 73d | 2026-05-05 | 2026-09-07 | 411, 250 | 5d | 0d | Vendor (Steel Fabricator) [5840 h] | 1,493,025.65 |
| 480 |  | BMS / DCIM — manufacture & delivery (LT: 16 weeks) | 64d | 2026-05-21 | 2026-09-09 | 416, 295 | 172d | 23d | Vendor (BMS Supplier) [1536 h] |  |
| 485 |  | Gas suppression systems — manufacture & delivery (LT: 20 weeks) | 84d | 2026-05-21 | 2026-10-07 | 416, 295 | 157d | 50d | Vendor (Suppression Supplier) [2016 h] | 1,107,255.1 |
| 456 |  | Mechanical order release — chillers, dry coolers, CRAH, WHR plant | 5d | 2026-05-22 | 2026-05-28 | 414, 290 | 66d | 0d | Procurement [80 h] |  |
| 475 |  | Acoustic louvres — manufacture & delivery (LT: 16 weeks) | 64d | 2026-05-22 | 2026-09-10 | 412, 270 | 27d | 22d | Vendor (Louvre Manufacturer) [2048 h] |  |
| 490 |  | Cladding panels — off-site fabrication and delivery (55 d) | 55d | 2026-05-22 | 2026-08-28 | 412, 270 | 36d | 0d | Vendor (Facade Fabricator) [3520 h] |  |
| 457 |  | Chillers 4 nr — manufacture & delivery (LT: 26 weeks) | 114d | 2026-05-29 | 2026-11-26 | 456 | 66d | 16d | Vendor (Chiller Manufacturer) [3648 h] | 1,956,828.19 |
| 458 |  | Dry coolers / adiabatic units 10 nr — manufacture & delivery (LT: 22 weeks) | 94d | 2026-05-29 | 2026-10-29 | 456 | 77d | 4d | Vendor (Dry Cooler Manufacturer) [3008 h] | 2,561,481.47 |
| 459 |  | CRAH units 28 nr — manufacture & delivery (LT: 22 weeks) | 94d | 2026-05-29 | 2026-10-29 | 456 | 134d | 49d | Vendor (CRAH Manufacturer) [3008 h] | 1,938,981.91 |
| 460 |  | Waste-heat recovery plant 4 MW — manufacture & delivery (LT: 30 weeks) | 132d | 2026-05-29 | 2026-12-22 | 456 | 124d | 59d | Vendor (WHR Manufacturer) [4224 h] | 3,246,528.84 |
| 471 |  | Precast wall panels batch B (Halls 2-4) — production & delivery | 64d | 2026-06-01 | 2026-09-18 | 470 SS+20d | 53d | 48d | Vendor (Precast Factory) [7680 h] | 1,148,571.39 |
| 440 |  | Electrical order release — generators, UPS, busway | 5d | 2026-06-02 | 2026-06-08 | 415, 281 | 47d | 0d | Procurement [80 h] |  |
| 466 |  | Structural steel batch B (Halls 2-4) — fabrication & delivery | 74d | 2026-06-03 | 2026-10-06 | 465 SS+20d | 31d | 26d | Vendor (Steel Fabricator) [5920 h] | 1,625,362.14 |
| 445 |  | Standby generators 8 nr — manufacture & delivery (LT: 40 weeks) | 180d | 2026-06-09 | 2027-03-15 | 440 | 47d | 0d | Vendor (Generator Manufacturer) [5760 h] | 7,181,721.72 |
| 450 |  | UPS modules 16 nr & batteries — manufacture & delivery (LT: 30 weeks UPS; batteries 24) | 131d | 2026-06-09 | 2027-01-04 | 440 | 91d | 58d | Vendor (UPS Manufacturer) [4192 h] | 3,705,240.05 |
| 452 |  | Overhead busway — manufacture & delivery (LT: 20 weeks) | 84d | 2026-06-09 | 2026-10-26 | 440 | 119d | 12d | Vendor (Busway Manufacturer) [2016 h] | 537,734.38 |
| 430 |  | Switchgear order release (design to DNO >=12 weeks before order, GC s4.2) | 5d | 2026-06-22 | 2026-06-26 | 415, 280 FS+60d | 25d | 0d | Procurement [80 h] |  |
| 435 |  | 20 kV/LV switchgear, hall substations — manufacture & delivery (LT-02: 38 weeks) | 171d | 2026-06-29 | 2027-03-19 | 430 | 25d | 0d | Vendor (Switchgear Manufacturer) [5472 h] | 3,314,948.97 |

Notes:
- 410: Duration Basis: hist-prj-001-act-73 / Notes: [C] analog tender evaluation/award 13.5-15d; bids in hand (2026-03-19); shortened, early-works package
- 411: Duration Basis: hist-prj-004-act-79 / Notes: [C] analog Structural Steel Tender & Vendor Award 15d
- 412: Duration Basis: hist-prj-001-act-73 / Notes: [C] analog tender award 13.5-20d
- 413: Duration Basis: hist-prj-001-act-73 / Notes: [C] analog tender award
- 414: Duration Basis: hist-prj-001-act-73 / Notes: [C] analog tender award; large package
- 415: Duration Basis: hist-prj-001-act-73 / Notes: [C] analog tender award; large package
- 416: Duration Basis: hist-prj-001-act-73 / Notes: [C] analog tender award
- 417: Duration Basis: hist-prj-001-act-73 / Notes: [C] analog tender award
- 420: Notes: [E] ASSUMPTION A-1 (best case): PO in week 1. LT-01 order-by 2026-01-16 precedes Commencement
- 425: Notes: [D] PDC-LT-001 LT-01: 52 weeks STATED / Expenses: Transformers 2 nr 110/20 kV 16 MVA — manufacture & delivery (LT-01: 52 weeks) — Materials/Plant/Sublet 2194669
- 470: Notes: [D] PDC-LT-001: precast 16 weeks STATED / Expenses: Precast wall panels batch A (Hall 1 + spine) — production & delivery (LT: 16 weeks) — Materials/Plant/Sublet 1216134
- 465: Notes: [D] PDC-LT-001: steel 18 weeks STATED; TP-002 offers: from released design / Expenses: Structural steel batch A (Hall 1 + spine) — fabrication & delivery (LT: 18 weeks from released design) — Materials/Plant/Sublet 1493026
- 480: Notes: [D] PDC-LT-001: BMS 16 weeks STATED
- 485: Notes: [D] PDC-LT-001: suppression 20 weeks STATED / Expenses: Gas suppression systems — manufacture & delivery (LT: 20 weeks) — Materials/Plant/Sublet 1107255
- 456: Notes: [C] after TP-005 award + cooling design
- 475: Notes: [D] PDC-LT-001: louvres 16 weeks STATED
- 490: Notes: [D] PDC-SCH-003 subcontractor-stated 55d; not in LT register
- 457: Notes: [D] PDC-LT-001: chillers 26 weeks STATED / Expenses: Chillers 4 nr — manufacture & delivery (LT: 26 weeks) — Materials/Plant/Sublet 1956828
- 458: Notes: [D] PDC-LT-001: dry coolers 22 weeks STATED / Expenses: Dry coolers / adiabatic units 10 nr — manufacture & delivery (LT: 22 weeks) — Materials/Plant/Sublet 2561481
- 459: Notes: [D] PDC-LT-001: CRAH 22 weeks STATED / Expenses: CRAH units 28 nr — manufacture & delivery (LT: 22 weeks) — Materials/Plant/Sublet 1938982
- 460: Notes: [D] PDC-LT-001: heat recovery 30 weeks STATED / Expenses: Waste-heat recovery plant 4 MW — manufacture & delivery (LT: 30 weeks) — Materials/Plant/Sublet 3246529
- 471: Notes: [D] 16 weeks; batch B released 20 wd after batch A / Expenses: Precast wall panels batch B (Halls 2-4) — production & delivery — Materials/Plant/Sublet 1148571
- 440: Notes: [C] after TP-006 award + electrical design
- 466: Notes: [D] 18 weeks; batch B released 20 wd after batch A / Expenses: Structural steel batch B (Halls 2-4) — fabrication & delivery — Materials/Plant/Sublet 1625362
- 445: Notes: [D] PDC-LT-001: generators 40 weeks STATED / Expenses: Standby generators 8 nr — manufacture & delivery (LT: 40 weeks) — Materials/Plant/Sublet 7181722
- 450: Notes: [D] PDC-LT-001: UPS 30 wks STATED; batteries 24 wks in parallel / Expenses: UPS modules 16 nr & batteries — manufacture & delivery (LT: 30 weeks UPS; batteries 24) — Materials/Plant/Sublet 3705240
- 452: Notes: [D] PDC-LT-001: busway 20 weeks STATED / Expenses: Overhead busway — manufacture & delivery (LT: 20 weeks) — Materials/Plant/Sublet 537734
- 430: Notes: [D] PDC-GC-001 s4.2: 12 weeks
- 435: Notes: [D] PDC-LT-001 LT-02: 38 weeks STATED / Expenses: 20 kV/LV switchgear, hall substations — manufacture & delivery (LT-02: 38 weeks) — Materials/Plant/Sublet 3314949

| ID | WBS | Activity | Type | Duration | Start | Finish | Predecessors | Total float | Free float | Resources | Cost |
| --- | --- | --- | --- | --- | --- | --- | --- | --- | --- | --- | --- |
|  | 5 | **Site establishment & enabling** |  |  | 2026-03-02 | 2026-07-31 |  |  |  |  |  |
| 515 |  | Insurances, bonds & guarantees placed |  | 5d | 2026-03-02 | 2026-03-06 | 100 | 39d | 25d | Site Management [80 h] | 599,943.93 |
| 510 |  | Site establishment: hoarding, haul road, offices, welfare, temporary services |  | 15d | 2026-03-23 | 2026-04-14 | 325 | 14d | 0d | Site Establishment Crew [1200 h] | 1,470,830.28 |
| 520 |  | Site clearance & topsoil strip (26,565 m2 x 0.30 m = 7,970 m3) |  | 25d | 2026-04-15 | 2026-05-21 | 510, 345, 410, 515 | 14d | 0d | Earthworks Crew [6000 h] | 168,512.26 |
| 540 |  | Dewatering / perched-water contingency (hammock) |  | 60d | 2026-04-15 | 2026-07-31 | 520 SS | 165d | 61d | Earthworks Crew [1920 h] | 362,479.65 |
| 530 |  | Excavate unrecorded made ground, NW corner (PROVISIONAL, 1,620 m3) |  | 10d | 2026-05-22 | 2026-06-04 | 520 | 46d | 27d | Earthworks Crew [1280 h] | 102,762.98 |
|  | 6 | **6** |  |  | 2026-06-24 | 2027-08-13 |  |  |  |  |  |
|  | 1 | **Hall 1 — Substructure** |  |  | 2026-06-24 | 2026-08-18 |  |  |  |  |  |
| 1010 |  | Hall 1: excavation in till (2592 m3) |  | 15d | 2026-06-24 | 2026-08-04 | 5010 | 19d | 0d | Earthworks Crew [1920 h] | 72,423.43 |
| 1020 |  | Hall 1: pad/strip foundations, ground beams |  | 3d | 2026-08-05 | 2026-08-07 | 1010, 240, 530 | 19d | 0d | Concrete Crew [480 h] | 191,832.55 |
| 1030 |  | Hall 1: sub-base, capping & geotextile (1,728 m2) |  | 5d | 2026-08-12 | 2026-08-18 | 1020 FS+2d | 19d | 14d | Civil Crew [480 h] | 88,735.02 |
|  | 2 | **Hall 1 — Structure** |  |  | 2026-09-08 | 2026-10-12 |  |  |  |  |  |
| 1040 |  | Hall 1: structural steel erection (112.32 t) |  | 22d | 2026-09-08 | 2026-10-07 | 1030, 1020 FS+7d, 465, 340 | 5d | 0d | Structural Steel Crew [2816 h] | 141,796.23 |
| 1050 |  | Hall 1: precast wall panel erection (64 nr = 1,651 m2) |  | 15d | 2026-09-22 | 2026-10-12 | 470, 1040 SS+10d | 5d | 0d | Steel & Precast Crew [1440 h] | 59,752.27 |
| 1060 |  | Hall 1: roof deck, purlins & steel fire protection |  | 15d | 2026-09-22 | 2026-10-12 | 1040 SS+10d, 1040 FF+3d | 15d | 0d | Structural Steel Crew [1920 h] | 207,096.36 |
|  | 3 | **Hall 1 — Envelope** |  |  | 2026-10-13 | 2026-11-26 |  |  |  |  |  |
| 1070 |  | Hall 1: roof insulation & membrane |  | 12d | 2026-10-13 | 2026-10-28 | 1060 | 15d | 10d | Waterproofing Crew [768 h] | 277,146.72 |
| 1080 |  | Hall 1: wall cladding, louvres & doors |  | 22d | 2026-10-13 | 2026-11-11 | 1050, 475, 490 | 5d | 0d | Facade Crew [2816 h] | 470,035.08 |
| 1090 |  | Hall 1: weathertight | milestone | 0d | 2026-11-12 | 2026-11-12 | 1070, 1080 | 5d | 0d |  |  |
| 1100 |  | Hall 1: ground-bearing slab 250 mm (432 m3) |  | 11d | 2026-11-12 | 2026-11-26 | 1090 | 107d | 0d | Concrete Crew [1760 h] | 307,962.71 |
|  | 4 | **Hall 1 — MEP** |  |  | 2026-11-12 | 2027-04-28 |  |  |  |  |  |
| 1140 |  | Hall 1: containment, busway, lighting & small power |  | 29d | 2026-11-12 | 2026-12-22 | 1090, 452, 305 | 107d | 0d | Electrical Crew [4640 h] | 195,434.4 |
| 1160 |  | Hall 1: fire detection (ASD), addressable & sprinklers |  | 15d | 2026-11-26 | 2026-12-16 | 1140 SS+10d, 295 | 107d | 0d | Fire Protection Crew [720 h] | 72,428.33 |
| 1180 |  | Hall 1: BMS/DCIM field devices, security & structured cabling |  | 20d | 2026-11-26 | 2026-12-23 | 1140 SS+10d, 480, 305 | 117d | 84d | BMS Crew [640 h] | 406,461.78 |
| 1170 |  | Hall 1: gas suppression install |  | 15d | 2026-12-17 | 2027-01-12 | 1160, 485 | 107d | 74d | Fire Protection Crew [720 h] | 43,202.15 |
| 1110 |  | Hall 1: CHW pipework (375 m) |  | 19d | 2027-01-05 | 2027-02-01 | 1090, 305, 5086 SS+5d | 81d | 0d | Mechanical Crew [2432 h] | 1,003,694.84 |
| 1115 |  | Hall 1: CRAH units 7 nr set & connect |  | 22d | 2027-01-13 | 2027-02-11 | 459, 1100, 1110 SS+5d | 85d | 52d | Mechanical Crew [3168 h] | 75,653.92 |
| 1120 |  | Hall 1: hall substation 20/0.4 kV, 2 LV switchboards |  | 6d | 2027-03-22 | 2027-03-31 | 435, 305, 1100 | 33d | 0d | Electrical Crew [384 h] | 79,524.63 |
| 1130 |  | Hall 1: UPS 4 nr + battery bank |  | 9d | 2027-03-31 | 2027-04-12 | 450, 1120 SS+5d, 1100 | 33d | 0d | Electrical Crew [864 h] | 142,129.12 |
| 1150 |  | Hall 1: feeder cables, terminations & metering |  | 12d | 2027-04-13 | 2027-04-28 | 1140 SS+19d, 1120, 1130 | 33d | 0d | Electrical Crew [1920 h] | 229,287.2 |

Notes:
- 515: Notes: [E] cost-event activity (BOQ A.05) / Expenses: Insurances, bonds & guarantees placed — Materials/Plant/Sublet 599944
- 510: Notes: [D] PDC-SCH-001 mobilisation 15d; analog Temporary Site Facilities 5d / Expenses: Site establishment: hoarding, haul road, offices, welfare, temporary services — Materials/Plant/Sublet 1470830
- 520: Duration Basis: hist-prj-001-act-132 / Notes: [B] EARTH 12.50 m3/member-day (11 rows/5 projects); raw 21.3d +15%; strip depth 0.30 m assumed / Expenses: Site clearance & topsoil strip (26,565 m2 x 0.30 m = 7,970 m3) — Materials/Plant/Sublet 168512
- 540: Notes: [E] BOQ B.11 contingency; spans excavation/foundation period (judgement) / Expenses: Dewatering / perched-water contingency (hammock) — Materials/Plant/Sublet 362480
- 530: Duration Basis: hist-prj-001-act-132 / Notes: [A] EARTH 12.50 m3/member-day (11 rows/5 proj); raw 8.1 d +15% / Expenses: Excavate unrecorded made ground, NW corner (PROVISIONAL, 1,620 m3) — Materials/Plant/Sublet 102763
- 1010: Duration Basis: hist-prj-001-act-132 / Notes: [A] EARTH 12.50 m3/md; raw 13.0 d +15% / Expenses: Hall 1: excavation in till (2592 m3) — Materials/Plant/Sublet 72423.4
- 1020: Duration Basis: hist-prj-001-act-140 / Notes: [B] FDN 165 m3 RC @3.75/md; 2.2 d +15%; conv A-2 0.6 m3/m beam, 8 m3/pad / Expenses: Hall 1: pad/strip foundations, ground beams — Materials/Plant/Sublet 191833
- 1030: Duration Basis: hist-prj-001-act-161 / Notes: [A] SUBB 33.33 m2/md; raw 4.3 d +15% / Expenses: Hall 1: sub-base, capping & geotextile (1,728 m2) — Materials/Plant/Sublet 88735
- 1040: Notes: [D] Sub-stated PDC-SCH-002 22 d/hall; history steel erection rows are LS (no t rate) / Expenses: Hall 1: structural steel erection (112.32 t) — Materials/Plant/Sublet 141796
- 1050: Duration Basis: hist-prj-001-act-146 / Notes: [B] PLANK 11.11 m2/md proxy; raw 12.4 d +15% / Expenses: Hall 1: precast wall panel erection (64 nr = 1,651 m2) — Materials/Plant/Sublet 59752.3
- 1060: Duration Basis: hist-prj-004-act-151 / Notes: [B] DECK 18.75 m2/md + intumescent at ceiling-finish rate / Expenses: Hall 1: roof deck, purlins & steel fire protection — Materials/Plant/Sublet 207096
- 1070: Duration Basis: hist-prj-001-act-153 / Notes: [A] ROOFM 37.5 + ROOFI 60 m2/md; winter margin 25% / Expenses: Hall 1: roof insulation & membrane — Materials/Plant/Sublet 277147
- 1080: Duration Basis: hist-prj-003-act-149 / Notes: [B] FACADE 7.14 m2/md; 15.8 d +25% +2 d / Expenses: Hall 1: wall cladding, louvres & doors — Materials/Plant/Sublet 470035
- 1090: Notes: [M] milestone
- 1100: Duration Basis: hist-prj-001-act-143 / Notes: [B] SLAB 2.64 m3/md; raw 8.2 d +25% winter / Expenses: Hall 1: ground-bearing slab 250 mm (432 m3) — Materials/Plant/Sublet 307963
- 1140: Duration Basis: hist-prj-001-act-183 / Notes: [C] analog cable trays/containment 25 d +15% / Expenses: Hall 1: containment, busway, lighting & small power — Materials/Plant/Sublet 195434
- 1160: Notes: [D] PDC-SCH-007 detection 12.5 d/hall +15% / Expenses: Hall 1: fire detection (ASD), addressable & sprinklers — Materials/Plant/Sublet 72428.3
- 1180: Notes: [D] PDC-SCH-007 cabling 15 d/hall + BMS; +30% / Expenses: Hall 1: BMS/DCIM field devices, security & structured cabling — Materials/Plant/Sublet 406462
- 1170: Notes: [D] PDC-SCH-007 gas suppression 25 d/hall pair +15% / Expenses: Hall 1: gas suppression install — Materials/Plant/Sublet 43202.2
- 1110: Duration Basis: hist-prj-001-act-168 / Notes: [A] PIPE 2.50 lm/md; 9.4 d +15% +8 d insulation / Expenses: Hall 1: CHW pipework (375 m) — Materials/Plant/Sublet 1003695
- 1115: Duration Basis: hist-prj-001-act-171 / Notes: [C] analog AHU install 8 d/set x7/3 crews +15% / Expenses: Hall 1: CRAH units 7 nr set & connect — Materials/Plant/Sublet 75653.9
- 1120: Duration Basis: hist-prj-001-act-180 / Notes: [C] analog transformer/MV room 5 d +15% / Expenses: Hall 1: hall substation 20/0.4 kV, 2 LV switchboards — Materials/Plant/Sublet 79524.6
- 1130: Duration Basis: hist-prj-001-act-182 / Notes: [C] analog UPS install 3 d/set x5/2 crews +15% / Expenses: Hall 1: UPS 4 nr + battery bank — Materials/Plant/Sublet 142129
- 1150: Duration Basis: hist-prj-001-act-184 / Notes: [C] analog main feeder cables 10 d +15% / Expenses: Hall 1: feeder cables, terminations & metering — Materials/Plant/Sublet 229287

| ID | WBS | Activity | Type | Duration | Start | Finish | Predecessors | Total float | Free float | Resources | Cost |
| --- | --- | --- | --- | --- | --- | --- | --- | --- | --- | --- | --- |
|  | 5 | **Hall 1 — Fit-out** |  |  | 2026-12-04 | 2027-02-17 |  |  |  |  |  |
| 1190 |  | Hall 1: partitions, linings & plant-room finishes |  | 12d | 2026-12-04 | 2026-12-21 | 1100 FS+5d, 413 | 107d | 26d | Fit-Out Crew [1920 h] | 282,326.22 |
| 1200 |  | Hall 1: anti-static / sealed floor finish (1,250 m2) |  | 5d | 2027-02-02 | 2027-02-08 | 1190, 1110 | 81d | 0d | Fit-Out Crew [240 h] | 123,883.49 |
| 1210 |  | Hall 1: aisle containment framework (1,250 m2) |  | 7d | 2027-02-09 | 2027-02-17 | 1200, 1140, 1160 | 81d | 48d | Fit-Out Crew [1120 h] | 205,048.54 |
|  | 6 | **Hall 1 — Commissioning & handover** |  |  | 2027-04-29 | 2027-08-13 |  |  |  |  |  |
| 1220 |  | Hall 1: L2 static inspection (pre-energisation) |  | 10d | 2027-04-29 | 2027-05-13 | 1115, 1150, 1170, 1180, 1210 | 33d | 8d | Commissioning Team [640 h] | 34,103.61 |
| 1265 |  | Hall 1: ready for tenant fit-out access (white space complete) | milestone | 0d | 2027-04-29 | 2027-04-29 | 1210, 1150 | 142d | 49d |  |  |
| 1225 |  | Hall 1: L3 component start-up (after energisation) |  | 11d | 2027-05-26 | 2027-06-09 | 1220, 5096 | 25d | 0d | Commissioning Team [704 h] | 34,103.61 |
| 1230 |  | Hall 1: L4 integrated systems test incl. failure-mode demonstrations |  | 15d | 2027-06-10 | 2027-07-01 | 1225, 5150 | 25d | 0d | Commissioning Team [960 h] | 136,414.45 |
| 1240 |  | Hall 1: L5 24 h load-bank test (set-up, 24 h run, strip-out) |  | 5d | 2027-07-02 | 2027-07-08 | 1230 | 93d | 0d | Commissioning Team [320 h] | 180,261.95 |
| 1250 |  | Hall 1: as-builts, O&M, training, occupancy inspection, Tenant technical acceptance |  | 10d | 2027-07-09 | 2027-08-12 | 1240, 5310, 1265, 5090, 5092 | 93d | 0d | Site Management [320 h] | 80,590.08 |
| 1260 |  | SECTION 1 TAKING-OVER (Hall 1 + shared infrastructure) | milestone | 0d | 2027-08-13 | 2027-08-13 | 1250 | 93d |  |  |  |
|  | 7 | **7** |  |  | 2026-07-27 | 2027-08-27 |  |  |  |  |  |
|  | 1 | **Hall 2 — Substructure** |  |  | 2026-07-27 | 2026-08-28 |  |  |  |  |  |
| 2010 |  | Hall 2: excavation in till (2592 m3) |  | 15d | 2026-07-27 | 2026-08-14 | 1010 SS+8d | 58d | 0d | Earthworks Crew [1920 h] | 72,423.43 |
| 2020 |  | Hall 2: pad/strip foundations, ground beams |  | 3d | 2026-08-17 | 2026-08-19 | 2010, 240, 1020 SS+5d | 58d | 0d | Concrete Crew [480 h] | 191,832.55 |
| 2030 |  | Hall 2: sub-base, capping & geotextile (1,728 m2) |  | 5d | 2026-08-24 | 2026-08-28 | 2020 FS+2d | 58d | 53d | Civil Crew [480 h] | 88,735.02 |
|  | 2 | **Hall 2 — Structure** |  |  | 2026-11-12 | 2026-12-16 |  |  |  |  |  |
| 2040 |  | Hall 2: structural steel erection (112.32 t) |  | 22d | 2026-11-12 | 2026-12-11 | 2030, 2020 FS+7d, 466, 1040, 5060, 1090 | 5d | 0d | Structural Steel Crew [2816 h] | 141,796.23 |
| 2050 |  | Hall 2: precast wall panel erection (64 nr = 1,651 m2) |  | 15d | 2026-11-26 | 2026-12-16 | 471, 2040 SS+10d | 5d | 0d | Steel & Precast Crew [1440 h] | 59,752.27 |
| 2060 |  | Hall 2: roof deck, purlins & steel fire protection |  | 15d | 2026-11-26 | 2026-12-16 | 2040 SS+10d, 2040 FF+3d | 15d | 0d | Structural Steel Crew [1920 h] | 207,096.36 |
|  | 3 | **Hall 2 — Envelope** |  |  | 2026-12-17 | 2027-02-05 |  |  |  |  |  |
| 2070 |  | Hall 2: roof insulation & membrane |  | 12d | 2026-12-17 | 2027-01-07 | 2060 | 15d | 10d | Waterproofing Crew [768 h] | 277,146.72 |
| 2080 |  | Hall 2: wall cladding, louvres & doors |  | 22d | 2026-12-17 | 2027-01-21 | 2050, 475, 490 | 5d | 0d | Facade Crew [2816 h] | 470,035.08 |
| 2090 |  | Hall 2: weathertight | milestone | 0d | 2027-01-22 | 2027-01-22 | 2070, 2080 | 5d | 0d |  |  |
| 2100 |  | Hall 2: ground-bearing slab 250 mm (432 m3) |  | 11d | 2027-01-22 | 2027-02-05 | 2090 | 75d | 0d | Concrete Crew [1760 h] | 307,962.71 |

Notes:
- 1190: Duration Basis: hist-prj-001-act-201 / Notes: [A] PART 11.25 + PLANTFIN 25 m2/md / Expenses: Hall 1: partitions, linings & plant-room finishes — Materials/Plant/Sublet 282326
- 1200: Duration Basis: hist-prj-001-act-203 / Notes: [A] RAF 58.33 m2/md; raw 3.6 d +15% / Expenses: Hall 1: anti-static / sealed floor finish (1,250 m2) — Materials/Plant/Sublet 123883
- 1210: Duration Basis: hist-prj-001-act-201 / Notes: [B] PART 11.25 m2/md proxy; raw 5.6 d +15% / Expenses: Hall 1: aisle containment framework (1,250 m2) — Materials/Plant/Sublet 205049
- 1220: Duration Basis: hist-prj-001-act-217 / Notes: [C] analog electrical testing 8 d + HVAC cx 10 d; +15% / Expenses: Hall 1: L2 static inspection (pre-energisation) — Materials/Plant/Sublet 34103.6
- 1265: Notes: [M] compare TA Month 12 (2027-03-02)
- 1225: Duration Basis: hist-prj-001-act-215 / Notes: [C] analog HVAC commissioning 10 d +15% / Expenses: Hall 1: L3 component start-up (after energisation) — Materials/Plant/Sublet 34103.6
- 1230: Notes: [D] ER L4 (4 failure modes); PDC-SCH-007 L4 15 d; analog BMS integrated test 8 d +25% / Expenses: Hall 1: L4 integrated systems test incl. failure-mode demonstrations — Materials/Plant/Sublet 136414
- 1240: Notes: [D] ER L5 24 h; permit load-bank 09-16 weekdays; 5 d incl set-up (judgement) / Expenses: Hall 1: L5 24 h load-bank test (set-up, 24 h run, strip-out) — Materials/Plant/Sublet 180262
- 1250: Notes: [C] analog authority final inspection 3 d + occupancy permit 5 d + 2 d tenant / Expenses: Hall 1: as-builts, O&M, training, occupancy inspection, Tenant technical acceptance — Materials/Plant/Sublet 80590.1
- 1260: Notes: [M] contract 2027-05-02
- 2010: Duration Basis: hist-prj-001-act-132 / Notes: [A] EARTH 12.50 m3/md; raw 13.0 d +15% / Expenses: Hall 2: excavation in till (2592 m3) — Materials/Plant/Sublet 72423.4
- 2020: Duration Basis: hist-prj-001-act-140 / Notes: [B] FDN 3.75 m3/md; 2.2 d +15% / Expenses: Hall 2: pad/strip foundations, ground beams — Materials/Plant/Sublet 191833
- 2030: Duration Basis: hist-prj-001-act-161 / Notes: [A] SUBB 33.33 m2/md; raw 4.3 d +15% / Expenses: Hall 2: sub-base, capping & geotextile (1,728 m2) — Materials/Plant/Sublet 88735
- 2040: Notes: [D] Sub-stated PDC-SCH-002 22 d/hall / Expenses: Hall 2: structural steel erection (112.32 t) — Materials/Plant/Sublet 141796
- 2050: Duration Basis: hist-prj-001-act-146 / Notes: [B] PLANK 11.11 m2/md proxy; raw 12.4 d +15% / Expenses: Hall 2: precast wall panel erection (64 nr = 1,651 m2) — Materials/Plant/Sublet 59752.3
- 2060: Duration Basis: hist-prj-004-act-151 / Notes: [B] DECK 18.75 m2/md + intumescent proxy / Expenses: Hall 2: roof deck, purlins & steel fire protection — Materials/Plant/Sublet 207096
- 2070: Duration Basis: hist-prj-001-act-153 / Notes: [A] ROOFM 37.5 + ROOFI 60 m2/md; winter 25% / Expenses: Hall 2: roof insulation & membrane — Materials/Plant/Sublet 277147
- 2080: Duration Basis: hist-prj-003-act-149 / Notes: [B] FACADE 7.14 m2/md; 15.8 d +25% +2 d / Expenses: Hall 2: wall cladding, louvres & doors — Materials/Plant/Sublet 470035
- 2090: Notes: [M] milestone
- 2100: Duration Basis: hist-prj-001-act-143 / Notes: [B] SLAB 2.64 m3/md; raw 8.2 d +25% winter / Expenses: Hall 2: ground-bearing slab 250 mm (432 m3) — Materials/Plant/Sublet 307963

| ID | WBS | Activity | Type | Duration | Start | Finish | Predecessors | Total float | Free float | Resources | Cost |
| --- | --- | --- | --- | --- | --- | --- | --- | --- | --- | --- | --- |
|  | 4 | **Hall 2 — MEP** |  |  | 2027-01-22 | 2027-04-28 |  |  |  |  |  |
| 2110 |  | Hall 2: CHW pipework (375 m) |  | 19d | 2027-01-22 | 2027-02-17 | 2090, 305, 5086 SS+5d | 84d | 6d | Mechanical Crew [2432 h] | 1,003,694.84 |
| 2140 |  | Hall 2: containment, busway, lighting & small power |  | 29d | 2027-01-22 | 2027-03-03 | 2090, 452, 305 | 75d | 0d | Electrical Crew [4640 h] | 195,434.4 |
| 2160 |  | Hall 2: fire detection (ASD), addressable & sprinklers |  | 15d | 2027-02-05 | 2027-02-25 | 2140 SS+10d, 295 | 75d | 0d | Fire Protection Crew [720 h] | 72,428.33 |
| 2180 |  | Hall 2: BMS/DCIM field devices, security & structured cabling |  | 20d | 2027-02-05 | 2027-03-04 | 2140 SS+10d, 480, 305 | 85d | 37d | BMS Crew [640 h] | 406,461.78 |
| 2115 |  | Hall 2: CRAH units 7 nr set & connect |  | 22d | 2027-02-08 | 2027-03-09 | 459, 2100, 2110 SS+5d | 82d | 34d | Mechanical Crew [3168 h] | 75,653.92 |
| 2170 |  | Hall 2: gas suppression install |  | 15d | 2027-02-26 | 2027-03-18 | 2160, 485 | 75d | 27d | Fire Protection Crew [720 h] | 43,202.15 |
| 2120 |  | Hall 2: hall substation 20/0.4 kV, 2 LV switchboards |  | 6d | 2027-03-22 | 2027-03-31 | 435, 305, 2100 | 48d | 0d | Electrical Crew [384 h] | 79,524.63 |
| 2130 |  | Hall 2: UPS 4 nr + battery bank |  | 9d | 2027-03-31 | 2027-04-12 | 450, 2120 SS+5d, 2100 | 48d | 0d | Electrical Crew [864 h] | 142,129.12 |
| 2150 |  | Hall 2: feeder cables, terminations & metering |  | 12d | 2027-04-13 | 2027-04-28 | 2140 SS+19d, 2120, 2130 | 48d | 0d | Electrical Crew [1920 h] | 229,287.2 |
|  | 5 | **Hall 2 — Fit-out** |  |  | 2027-02-15 | 2027-03-18 |  |  |  |  |  |
| 2190 |  | Hall 2: partitions, linings & plant-room finishes |  | 12d | 2027-02-15 | 2027-03-02 | 2100 FS+5d, 413 | 75d | 0d | Fit-Out Crew [1920 h] | 282,326.22 |
| 2200 |  | Hall 2: anti-static / sealed floor finish (1,250 m2) |  | 5d | 2027-03-03 | 2027-03-09 | 2190, 2110 | 75d | 0d | Fit-Out Crew [240 h] | 123,883.49 |
| 2210 |  | Hall 2: aisle containment framework (1,250 m2) |  | 7d | 2027-03-10 | 2027-03-18 | 2200, 2140, 2160 | 75d | 27d | Fit-Out Crew [1120 h] | 205,048.54 |
|  | 6 | **Hall 2 — Commissioning & handover** |  |  | 2027-04-29 | 2027-08-27 |  |  |  |  |  |
| 2220 |  | Hall 2: L2 static inspection (pre-energisation) |  | 10d | 2027-04-29 | 2027-05-13 | 2115, 2150, 2170, 2180, 2210 | 48d | 0d | Commissioning Team [640 h] | 34,103.61 |
| 2265 |  | Hall 2: ready for tenant fit-out access (white space complete) | milestone | 0d | 2027-04-29 | 2027-04-29 | 2210, 2150 | 142d | 59d |  |  |
| 2225 |  | Hall 2: L3 component start-up (after energisation) |  | 11d | 2027-05-14 | 2027-05-28 | 2220, 5210 | 48d | 23d | Commissioning Team [704 h] | 34,103.61 |
| 2230 |  | Hall 2: L4 integrated systems test incl. failure-mode demonstrations |  | 10d | 2027-07-02 | 2027-08-05 | 2225, 1230 | 25d | 0d | Commissioning Team [640 h] | 136,414.45 |
| 2240 |  | Hall 2: L5 24 h load-bank test (set-up, 24 h run, strip-out) |  | 5d | 2027-08-06 | 2027-08-12 | 2230 | 83d | 0d | Commissioning Team [320 h] | 180,261.95 |
| 2250 |  | Hall 2: as-builts, O&M, training, occupancy inspection, Tenant technical acceptance |  | 10d | 2027-08-13 | 2027-08-26 | 2240, 2265 | 83d | 0d | Site Management [320 h] | 80,590.08 |
| 2260 |  | SECTION 2 TAKING-OVER (Hall 2) | milestone | 0d | 2027-08-27 | 2027-08-27 | 2250 | 83d |  |  |  |
|  | 8 | **8** |  |  | 2026-08-06 | 2027-09-10 |  |  |  |  |  |
|  | 1 | **Hall 3 — Substructure** |  |  | 2026-08-06 | 2026-09-09 |  |  |  |  |  |
| 3010 |  | Hall 3: excavation in till (2592 m3) |  | 15d | 2026-08-06 | 2026-08-26 | 2010 SS+8d | 97d | 0d | Earthworks Crew [1920 h] | 72,423.43 |
| 3020 |  | Hall 3: pad/strip foundations, ground beams |  | 3d | 2026-08-27 | 2026-08-31 | 3010, 240, 2020 SS+5d | 97d | 0d | Concrete Crew [480 h] | 191,832.55 |
| 3030 |  | Hall 3: sub-base, capping & geotextile (1,728 m2) |  | 5d | 2026-09-03 | 2026-09-09 | 3020 FS+2d | 97d | 92d | Civil Crew [480 h] | 88,735.02 |

Notes:
- 2110: Duration Basis: hist-prj-001-act-168 / Notes: [A] PIPE 2.50 lm/md; 9.4 d +15% +8 d insulation / Expenses: Hall 2: CHW pipework (375 m) — Materials/Plant/Sublet 1003695
- 2140: Duration Basis: hist-prj-001-act-183 / Notes: [C] analog cable trays 25 d +15% / Expenses: Hall 2: containment, busway, lighting & small power — Materials/Plant/Sublet 195434
- 2160: Notes: [D] PDC-SCH-007 12.5 d/hall +15% / Expenses: Hall 2: fire detection (ASD), addressable & sprinklers — Materials/Plant/Sublet 72428.3
- 2180: Notes: [D] PDC-SCH-007 cabling 15 d/hall + BMS +30% / Expenses: Hall 2: BMS/DCIM field devices, security & structured cabling — Materials/Plant/Sublet 406462
- 2115: Duration Basis: hist-prj-001-act-171 / Notes: [C] analog AHU install 8 d/set x7/3 crews +15% / Expenses: Hall 2: CRAH units 7 nr set & connect — Materials/Plant/Sublet 75653.9
- 2170: Notes: [D] PDC-SCH-007 25 d/hall pair +15% / Expenses: Hall 2: gas suppression install — Materials/Plant/Sublet 43202.2
- 2120: Duration Basis: hist-prj-001-act-180 / Notes: [C] analog transformer/MV room 5 d +15% / Expenses: Hall 2: hall substation 20/0.4 kV, 2 LV switchboards — Materials/Plant/Sublet 79524.6
- 2130: Duration Basis: hist-prj-001-act-182 / Notes: [C] analog UPS install 3 d/set x5/2 crews +15% / Expenses: Hall 2: UPS 4 nr + battery bank — Materials/Plant/Sublet 142129
- 2150: Duration Basis: hist-prj-001-act-184 / Notes: [C] analog main feeder cables 10 d +15% / Expenses: Hall 2: feeder cables, terminations & metering — Materials/Plant/Sublet 229287
- 2190: Duration Basis: hist-prj-001-act-201 / Notes: [A] PART 11.25 + PLANTFIN 25 m2/md / Expenses: Hall 2: partitions, linings & plant-room finishes — Materials/Plant/Sublet 282326
- 2200: Duration Basis: hist-prj-001-act-203 / Notes: [A] RAF 58.33 m2/md; raw 3.6 d +15% / Expenses: Hall 2: anti-static / sealed floor finish (1,250 m2) — Materials/Plant/Sublet 123883
- 2210: Duration Basis: hist-prj-001-act-201 / Notes: [B] PART 11.25 m2/md proxy; raw 5.6 d +15% / Expenses: Hall 2: aisle containment framework (1,250 m2) — Materials/Plant/Sublet 205049
- 2220: Duration Basis: hist-prj-001-act-217 / Notes: [C] analog electrical testing 8 d + HVAC cx 10 d; +15% / Expenses: Hall 2: L2 static inspection (pre-energisation) — Materials/Plant/Sublet 34103.6
- 2265: Notes: [M] compare TA Month 14
- 2225: Duration Basis: hist-prj-001-act-215 / Notes: [C] analog HVAC commissioning 10 d +15% / Expenses: Hall 2: L3 component start-up (after energisation) — Materials/Plant/Sublet 34103.6
- 2230: Notes: [D] PDC-SCH-007 L4 25 d for S2-S4 combined; analog 8 d +25% / Expenses: Hall 2: L4 integrated systems test incl. failure-mode demonstrations — Materials/Plant/Sublet 136414
- 2240: Notes: [D] ER L5 24 h; permit load-bank hours; 5 d judgement / Expenses: Hall 2: L5 24 h load-bank test (set-up, 24 h run, strip-out) — Materials/Plant/Sublet 180262
- 2250: Notes: [C] analog authority inspection 3 d + occupancy 5 d + 2 d tenant / Expenses: Hall 2: as-builts, O&M, training, occupancy inspection, Tenant technical acceptance — Materials/Plant/Sublet 80590.1
- 2260: Notes: [M] contract 2027-07-02
- 3010: Duration Basis: hist-prj-001-act-132 / Notes: [A] EARTH 12.50 m3/md; raw 13.0 d +15% / Expenses: Hall 3: excavation in till (2592 m3) — Materials/Plant/Sublet 72423.4
- 3020: Duration Basis: hist-prj-001-act-140 / Notes: [B] FDN 3.75 m3/md; 2.2 d +15% / Expenses: Hall 3: pad/strip foundations, ground beams — Materials/Plant/Sublet 191833
- 3030: Duration Basis: hist-prj-001-act-161 / Notes: [A] SUBB 33.33 m2/md / Expenses: Hall 3: sub-base, capping & geotextile (1,728 m2) — Materials/Plant/Sublet 88735

| ID | WBS | Activity | Type | Duration | Start | Finish | Predecessors | Total float | Free float | Resources | Cost |
| --- | --- | --- | --- | --- | --- | --- | --- | --- | --- | --- | --- |
|  | 2 | **Hall 3 — Structure** |  |  | 2027-01-22 | 2027-02-25 |  |  |  |  |  |
| 3040 |  | Hall 3: structural steel erection (112.32 t) |  | 22d | 2027-01-22 | 2027-02-22 | 3030, 3020 FS+7d, 2040, 2090 | 5d | 0d | Structural Steel Crew [2816 h] | 141,796.23 |
| 3050 |  | Hall 3: precast wall panel erection (64 nr = 1,651 m2) |  | 15d | 2027-02-05 | 2027-02-25 | 471, 3040 SS+10d | 5d | 0d | Steel & Precast Crew [1440 h] | 59,752.27 |
| 3060 |  | Hall 3: roof deck, purlins & steel fire protection |  | 15d | 2027-02-05 | 2027-02-25 | 3040 SS+10d, 3040 FF+3d | 15d | 0d | Structural Steel Crew [1920 h] | 207,096.36 |
|  | 3 | **Hall 3 — Envelope** |  |  | 2027-02-26 | 2027-04-14 |  |  |  |  |  |
| 3070 |  | Hall 3: roof insulation & membrane |  | 12d | 2027-02-26 | 2027-03-15 | 3060 | 15d | 10d | Waterproofing Crew [768 h] | 277,146.72 |
| 3080 |  | Hall 3: wall cladding, louvres & doors |  | 22d | 2027-02-26 | 2027-03-31 | 3050, 475, 490 | 5d | 0d | Facade Crew [2816 h] | 470,035.08 |
| 3090 |  | Hall 3: weathertight | milestone | 0d | 2027-04-01 | 2027-04-01 | 3070, 3080 | 5d | 0d |  |  |
| 3100 |  | Hall 3: ground-bearing slab 250 mm (432 m3) |  | 10d | 2027-04-01 | 2027-04-14 | 3090 | 39d | 0d | Concrete Crew [1600 h] | 307,962.71 |
|  | 4 | **Hall 3 — MEP** |  |  | 2027-04-01 | 2027-05-27 |  |  |  |  |  |
| 3110 |  | Hall 3: CHW pipework (375 m) |  | 19d | 2027-04-01 | 2027-04-27 | 3090, 305, 5086 SS+5d | 47d | 5d | Mechanical Crew [2432 h] | 1,003,694.84 |
| 3140 |  | Hall 3: containment, busway, lighting & small power |  | 29d | 2027-04-01 | 2027-05-12 | 3090, 452, 305 | 38d | 0d | Electrical Crew [4640 h] | 195,434.4 |
| 3115 |  | Hall 3: CRAH units 7 nr set & connect |  | 22d | 2027-04-15 | 2027-05-17 | 459, 3100, 3110 SS+5d | 46d | 8d | Mechanical Crew [3168 h] | 75,653.92 |
| 3120 |  | Hall 3: hall substation 20/0.4 kV, 2 LV switchboards |  | 6d | 2027-04-15 | 2027-04-22 | 435, 305, 3100 | 42d | 0d | Electrical Crew [384 h] | 79,524.63 |
| 3160 |  | Hall 3: fire detection (ASD), addressable & sprinklers |  | 15d | 2027-04-15 | 2027-05-05 | 3140 SS+10d, 295 | 38d | 0d | Fire Protection Crew [720 h] | 72,428.33 |
| 3180 |  | Hall 3: BMS/DCIM field devices, security & structured cabling |  | 20d | 2027-04-15 | 2027-05-13 | 3140 SS+10d, 480, 305 | 48d | 10d | BMS Crew [640 h] | 406,461.78 |
| 3130 |  | Hall 3: UPS 4 nr + battery bank |  | 9d | 2027-04-22 | 2027-05-04 | 450, 3120 SS+5d, 3100 | 42d | 0d | Electrical Crew [864 h] | 142,129.12 |
| 3150 |  | Hall 3: feeder cables, terminations & metering |  | 12d | 2027-05-05 | 2027-05-21 | 3140 SS+19d, 3120, 3130 | 42d | 3d | Electrical Crew [1920 h] | 229,287.2 |
| 3170 |  | Hall 3: gas suppression install |  | 15d | 2027-05-07 | 2027-05-27 | 3160, 485 | 38d | 0d | Fire Protection Crew [720 h] | 43,202.15 |
|  | 5 | **Hall 3 — Fit-out** |  |  | 2027-04-22 | 2027-05-26 |  |  |  |  |  |
| 3190 |  | Hall 3: partitions, linings & plant-room finishes |  | 12d | 2027-04-22 | 2027-05-10 | 3100 FS+5d, 413 | 39d | 0d | Fit-Out Crew [1920 h] | 282,326.22 |
| 3200 |  | Hall 3: anti-static / sealed floor finish (1,250 m2) |  | 5d | 2027-05-11 | 2027-05-17 | 3190, 3110 | 39d | 0d | Fit-Out Crew [240 h] | 123,883.49 |
| 3210 |  | Hall 3: aisle containment framework (1,250 m2) |  | 7d | 2027-05-18 | 2027-05-26 | 3200, 3140, 3160 | 39d | 0d | Fit-Out Crew [1120 h] | 205,048.54 |
|  | 6 | **Hall 3 — Commissioning & handover** |  |  | 2027-05-27 | 2027-09-10 |  |  |  |  |  |
| 3265 |  | Hall 3: ready for tenant fit-out access (white space complete) | milestone | 0d | 2027-05-27 | 2027-05-27 | 3210, 3150 | 123d | 50d |  |  |
| 3220 |  | Hall 3: L2 static inspection (pre-energisation) |  | 10d | 2027-05-28 | 2027-06-10 | 3115, 3150, 3170, 3180, 3210 | 38d | 0d | Commissioning Team [640 h] | 34,103.61 |
| 3225 |  | Hall 3: L3 component start-up (after energisation) |  | 11d | 2027-06-11 | 2027-06-28 | 3220, 5210 | 38d | 13d | Commissioning Team [704 h] | 34,103.61 |
| 3230 |  | Hall 3: L4 integrated systems test incl. failure-mode demonstrations |  | 10d | 2027-08-06 | 2027-08-19 | 3225, 2230 | 25d | 0d | Commissioning Team [640 h] | 136,414.45 |
| 3240 |  | Hall 3: L5 24 h load-bank test (set-up, 24 h run, strip-out) |  | 5d | 2027-08-20 | 2027-08-26 | 3230 | 25d | 0d | Commissioning Team [320 h] | 180,261.95 |
| 3250 |  | Hall 3: as-builts, O&M, training, occupancy inspection, Tenant technical acceptance |  | 10d | 2027-08-27 | 2027-09-09 | 3240, 3265 | 73d | 0d | Site Management [320 h] | 80,590.08 |
| 3260 |  | SECTION 3 TAKING-OVER (Hall 3) | milestone | 0d | 2027-09-10 | 2027-09-10 | 3250 | 73d |  |  |  |

Notes:
- 3040: Notes: [D] Sub-stated PDC-SCH-002 22 d/hall / Expenses: Hall 3: structural steel erection (112.32 t) — Materials/Plant/Sublet 141796
- 3050: Duration Basis: hist-prj-001-act-146 / Notes: [B] PLANK 11.11 m2/md proxy / Expenses: Hall 3: precast wall panel erection (64 nr = 1,651 m2) — Materials/Plant/Sublet 59752.3
- 3060: Duration Basis: hist-prj-004-act-151 / Notes: [B] DECK 18.75 m2/md + intumescent proxy / Expenses: Hall 3: roof deck, purlins & steel fire protection — Materials/Plant/Sublet 207096
- 3070: Duration Basis: hist-prj-001-act-153 / Notes: [A] ROOFM 37.5 + ROOFI 60 m2/md; winter 25% / Expenses: Hall 3: roof insulation & membrane — Materials/Plant/Sublet 277147
- 3080: Duration Basis: hist-prj-003-act-149 / Notes: [B] FACADE 7.14 m2/md; 15.8 d +25% +2 d / Expenses: Hall 3: wall cladding, louvres & doors — Materials/Plant/Sublet 470035
- 3090: Notes: [M] milestone
- 3100: Duration Basis: hist-prj-001-act-143 / Notes: [B] SLAB 2.64 m3/md; raw 8.2 d +15% / Expenses: Hall 3: ground-bearing slab 250 mm (432 m3) — Materials/Plant/Sublet 307963
- 3110: Duration Basis: hist-prj-001-act-168 / Notes: [A] PIPE 2.50 lm/md; 9.4 d +15% +8 d insulation / Expenses: Hall 3: CHW pipework (375 m) — Materials/Plant/Sublet 1003695
- 3140: Duration Basis: hist-prj-001-act-183 / Notes: [C] analog cable trays 25 d +15% / Expenses: Hall 3: containment, busway, lighting & small power — Materials/Plant/Sublet 195434
- 3115: Duration Basis: hist-prj-001-act-171 / Notes: [C] analog AHU install 8 d/set x7/3 crews +15% / Expenses: Hall 3: CRAH units 7 nr set & connect — Materials/Plant/Sublet 75653.9
- 3120: Duration Basis: hist-prj-001-act-180 / Notes: [C] analog transformer/MV room 5 d +15% / Expenses: Hall 3: hall substation 20/0.4 kV, 2 LV switchboards — Materials/Plant/Sublet 79524.6
- 3160: Notes: [D] PDC-SCH-007 12.5 d/hall +15% / Expenses: Hall 3: fire detection (ASD), addressable & sprinklers — Materials/Plant/Sublet 72428.3
- 3180: Notes: [D] PDC-SCH-007 cabling 15 d/hall + BMS +30% / Expenses: Hall 3: BMS/DCIM field devices, security & structured cabling — Materials/Plant/Sublet 406462
- 3130: Duration Basis: hist-prj-001-act-182 / Notes: [C] analog UPS install 3 d/set x5/2 crews +15% / Expenses: Hall 3: UPS 4 nr + battery bank — Materials/Plant/Sublet 142129
- 3150: Duration Basis: hist-prj-001-act-184 / Notes: [C] analog main feeder cables 10 d +15% / Expenses: Hall 3: feeder cables, terminations & metering — Materials/Plant/Sublet 229287
- 3170: Notes: [D] PDC-SCH-007 25 d/hall pair +15% / Expenses: Hall 3: gas suppression install — Materials/Plant/Sublet 43202.2
- 3190: Duration Basis: hist-prj-001-act-201 / Notes: [A] PART 11.25 + PLANTFIN 25 m2/md / Expenses: Hall 3: partitions, linings & plant-room finishes — Materials/Plant/Sublet 282326
- 3200: Duration Basis: hist-prj-001-act-203 / Notes: [A] RAF 58.33 m2/md / Expenses: Hall 3: anti-static / sealed floor finish (1,250 m2) — Materials/Plant/Sublet 123883
- 3210: Duration Basis: hist-prj-001-act-201 / Notes: [B] PART 11.25 m2/md proxy; raw 5.6 d +15% / Expenses: Hall 3: aisle containment framework (1,250 m2) — Materials/Plant/Sublet 205049
- 3265: Notes: [M] compare TA Month 18
- 3220: Duration Basis: hist-prj-001-act-217 / Notes: [C] analog electrical testing 8 d + HVAC cx 10 d; +15% / Expenses: Hall 3: L2 static inspection (pre-energisation) — Materials/Plant/Sublet 34103.6
- 3225: Duration Basis: hist-prj-001-act-215 / Notes: [C] analog HVAC commissioning 10 d +15% / Expenses: Hall 3: L3 component start-up (after energisation) — Materials/Plant/Sublet 34103.6
- 3230: Notes: [D] PDC-SCH-007 L4 25 d for S2-S4 combined; analog 8 d +25% / Expenses: Hall 3: L4 integrated systems test incl. failure-mode demonstrations — Materials/Plant/Sublet 136414
- 3240: Notes: [D] ER L5 24 h; permit load-bank hours; 5 d judgement / Expenses: Hall 3: L5 24 h load-bank test (set-up, 24 h run, strip-out) — Materials/Plant/Sublet 180262
- 3250: Notes: [C] analog authority inspection 3 d + occupancy 5 d + 2 d tenant / Expenses: Hall 3: as-builts, O&M, training, occupancy inspection, Tenant technical acceptance — Materials/Plant/Sublet 80590.1
- 3260: Notes: [M] contract 2027-10-02

| ID | WBS | Activity | Type | Duration | Start | Finish | Predecessors | Total float | Free float | Resources | Cost |
| --- | --- | --- | --- | --- | --- | --- | --- | --- | --- | --- | --- |
|  | 9 | **9** |  |  | 2026-08-12 | 2027-12-23 |  |  |  |  |  |
|  | 1 | **Hall 4 — Substructure** |  |  | 2026-08-12 | 2026-11-04 |  |  |  |  |  |
| 4015 |  | Hall 4: rock blasting (east third, ~64.5% of 3,213.6 m3) |  | 35d | 2026-08-12 | 2026-09-29 | 5020 | 104d | 0d | Blasting Crew [3360 h] | 300,535.07 |
| 4010 |  | Hall 4: excavation in till (2592 m3) |  | 15d | 2026-09-30 | 2026-10-20 | 3010 SS+8d, 4015 | 104d | 0d | Earthworks Crew [1920 h] | 72,423.43 |
| 4020 |  | Hall 4: pad/strip foundations, ground beams & rock sockets |  | 4d | 2026-10-21 | 2026-10-26 | 4010, 240, 3020 SS+5d, 540 FF | 104d | 0d | Concrete Crew [640 h] | 339,845.08 |
| 4030 |  | Hall 4: sub-base, capping & geotextile (1,728 m2) |  | 5d | 2026-10-29 | 2026-11-04 | 4020 FS+2d | 104d | 99d | Civil Crew [480 h] | 88,735.02 |
|  | 2 | **Hall 4 — Structure** |  |  | 2027-04-01 | 2027-05-05 |  |  |  |  |  |
| 4040 |  | Hall 4: structural steel erection (112.32 t) |  | 22d | 2027-04-01 | 2027-04-30 | 4030, 4020 FS+7d, 3040, 3090 | 5d | 0d | Structural Steel Crew [2816 h] | 141,796.23 |
| 4050 |  | Hall 4: precast wall panel erection (64 nr = 1,651 m2) |  | 15d | 2027-04-15 | 2027-05-05 | 471, 4040 SS+10d | 5d | 0d | Steel & Precast Crew [1440 h] | 59,752.27 |
| 4060 |  | Hall 4: roof deck, purlins & steel fire protection |  | 15d | 2027-04-15 | 2027-05-05 | 4040 SS+10d, 4040 FF+3d | 15d | 0d | Structural Steel Crew [1920 h] | 207,096.36 |
|  | 3 | **Hall 4 — Envelope** |  |  | 2027-05-07 | 2027-06-18 |  |  |  |  |  |
| 4070 |  | Hall 4: roof insulation & membrane |  | 11d | 2027-05-07 | 2027-05-21 | 4060 | 15d | 10d | Waterproofing Crew [704 h] | 277,146.72 |
| 4080 |  | Hall 4: wall cladding, louvres & doors |  | 21d | 2027-05-07 | 2027-06-04 | 4050, 475, 490 | 5d | 0d | Facade Crew [2688 h] | 470,035.08 |
| 4090 |  | Hall 4: weathertight | milestone | 0d | 2027-06-07 | 2027-06-07 | 4070, 4080 | 5d | 0d |  |  |
| 4100 |  | Hall 4: ground-bearing slab 250 mm (432 m3) |  | 10d | 2027-06-07 | 2027-06-18 | 4090 | 6d | 0d | Concrete Crew [1600 h] | 307,962.71 |
|  | 4 | **Hall 4 — MEP** |  |  | 2027-06-07 | 2027-08-23 |  |  |  |  |  |
| 4110 |  | Hall 4: CHW pipework (375 m) |  | 19d | 2027-06-07 | 2027-07-02 | 4090, 305, 5086 SS+5d | 14d | 5d | Mechanical Crew [2432 h] | 1,003,694.84 |
| 4140 |  | Hall 4: containment, busway, lighting & small power |  | 29d | 2027-06-07 | 2027-08-06 | 4090, 452, 305 | 5d | 0d | Electrical Crew [4640 h] | 195,434.4 |
| 4115 |  | Hall 4: CRAH units 7 nr set & connect |  | 22d | 2027-06-21 | 2027-08-11 | 459, 4100, 4110 SS+5d | 13d | 8d | Mechanical Crew [3168 h] | 75,653.92 |
| 4120 |  | Hall 4: hall substation 20/0.4 kV, 2 LV switchboards |  | 6d | 2027-06-21 | 2027-06-29 | 435, 305, 4100 | 9d | 0d | Electrical Crew [384 h] | 79,524.63 |
| 4160 |  | Hall 4: fire detection (ASD), addressable & sprinklers |  | 15d | 2027-06-21 | 2027-08-02 | 4140 SS+10d, 295 | 5d | 0d | Fire Protection Crew [720 h] | 72,428.33 |
| 4180 |  | Hall 4: BMS/DCIM field devices, security & structured cabling |  | 20d | 2027-06-21 | 2027-08-09 | 4140 SS+10d, 480, 305 | 15d | 10d | BMS Crew [640 h] | 406,461.78 |
| 4130 |  | Hall 4: UPS 4 nr + battery bank |  | 9d | 2027-06-29 | 2027-07-09 | 450, 4120 SS+5d, 4100 | 9d | 0d | Electrical Crew [864 h] | 142,129.12 |
| 4150 |  | Hall 4: feeder cables, terminations & metering |  | 12d | 2027-08-02 | 2027-08-17 | 4140 SS+19d, 4120, 4130 | 9d | 3d | Electrical Crew [1920 h] | 229,287.2 |
| 4170 |  | Hall 4: gas suppression install |  | 15d | 2027-08-03 | 2027-08-23 | 4160, 485 | 5d | 0d | Fire Protection Crew [720 h] | 43,202.15 |

Notes:
- 4015: Notes: [D] No history for blasting; PDC-SCH-001 55 d/3,213.6 m3 x 64.5% / Expenses: Hall 4: rock blasting (east third, ~64.5% of 3,213.6 m3) — Materials/Plant/Sublet 300535
- 4010: Duration Basis: hist-prj-001-act-132 / Notes: [A] EARTH 12.50 m3/md; raw 13.0 d +15% / Expenses: Hall 4: excavation in till (2592 m3) — Materials/Plant/Sublet 72423.4
- 4020: Duration Basis: hist-prj-001-act-140 / Notes: [B] FDN 3.75 m3/md + PILE 0.28/md for 4 rock sockets / Expenses: Hall 4: pad/strip foundations, ground beams & rock sockets — Materials/Plant/Sublet 339845
- 4030: Duration Basis: hist-prj-001-act-161 / Notes: [A] SUBB 33.33 m2/md / Expenses: Hall 4: sub-base, capping & geotextile (1,728 m2) — Materials/Plant/Sublet 88735
- 4040: Notes: [D] Sub-stated PDC-SCH-002 22 d/hall / Expenses: Hall 4: structural steel erection (112.32 t) — Materials/Plant/Sublet 141796
- 4050: Duration Basis: hist-prj-001-act-146 / Notes: [B] PLANK 11.11 m2/md proxy / Expenses: Hall 4: precast wall panel erection (64 nr = 1,651 m2) — Materials/Plant/Sublet 59752.3
- 4060: Duration Basis: hist-prj-004-act-151 / Notes: [B] DECK 18.75 m2/md + intumescent proxy / Expenses: Hall 4: roof deck, purlins & steel fire protection — Materials/Plant/Sublet 207096
- 4070: Duration Basis: hist-prj-001-act-153 / Notes: [A] ROOFM 37.5 + ROOFI 60 m2/md / Expenses: Hall 4: roof insulation & membrane — Materials/Plant/Sublet 277147
- 4080: Duration Basis: hist-prj-003-act-149 / Notes: [B] FACADE 7.14 m2/md; 15.8 d +15% +3 d / Expenses: Hall 4: wall cladding, louvres & doors — Materials/Plant/Sublet 470035
- 4090: Notes: [M] milestone
- 4100: Duration Basis: hist-prj-001-act-143 / Notes: [B] SLAB 2.64 m3/md; raw 8.2 d +15% / Expenses: Hall 4: ground-bearing slab 250 mm (432 m3) — Materials/Plant/Sublet 307963
- 4110: Duration Basis: hist-prj-001-act-168 / Notes: [A] PIPE 2.50 lm/md; 9.4 d +15% +8 d insulation / Expenses: Hall 4: CHW pipework (375 m) — Materials/Plant/Sublet 1003695
- 4140: Duration Basis: hist-prj-001-act-183 / Notes: [C] analog cable trays 25 d +15% / Expenses: Hall 4: containment, busway, lighting & small power — Materials/Plant/Sublet 195434
- 4115: Duration Basis: hist-prj-001-act-171 / Notes: [C] analog AHU install 8 d/set x7/3 crews +15% / Expenses: Hall 4: CRAH units 7 nr set & connect — Materials/Plant/Sublet 75653.9
- 4120: Duration Basis: hist-prj-001-act-180 / Notes: [C] analog transformer/MV room 5 d +15% / Expenses: Hall 4: hall substation 20/0.4 kV, 2 LV switchboards — Materials/Plant/Sublet 79524.6
- 4160: Notes: [D] PDC-SCH-007 12.5 d/hall +15% / Expenses: Hall 4: fire detection (ASD), addressable & sprinklers — Materials/Plant/Sublet 72428.3
- 4180: Notes: [D] PDC-SCH-007 cabling 15 d/hall + BMS +30% / Expenses: Hall 4: BMS/DCIM field devices, security & structured cabling — Materials/Plant/Sublet 406462
- 4130: Duration Basis: hist-prj-001-act-182 / Notes: [C] analog UPS install 3 d/set x5/2 crews +15% / Expenses: Hall 4: UPS 4 nr + battery bank — Materials/Plant/Sublet 142129
- 4150: Duration Basis: hist-prj-001-act-184 / Notes: [C] analog main feeder cables 10 d +15% / Expenses: Hall 4: feeder cables, terminations & metering — Materials/Plant/Sublet 229287
- 4170: Notes: [D] PDC-SCH-007 25 d/hall pair +15% / Expenses: Hall 4: gas suppression install — Materials/Plant/Sublet 43202.2

| ID | WBS | Activity | Type | Duration | Start | Finish | Predecessors | Total float | Free float | Resources | Cost |
| --- | --- | --- | --- | --- | --- | --- | --- | --- | --- | --- | --- |
|  | 5 | **Hall 4 — Fit-out** |  |  | 2027-06-29 | 2027-08-20 |  |  |  |  |  |
| 4190 |  | Hall 4: partitions, linings & plant-room finishes |  | 12d | 2027-06-29 | 2027-08-04 | 4100 FS+5d, 413 | 6d | 0d | Fit-Out Crew [1920 h] | 282,326.22 |
| 4200 |  | Hall 4: anti-static / sealed floor finish (1,250 m2) |  | 5d | 2027-08-05 | 2027-08-11 | 4190, 4110 | 6d | 0d | Fit-Out Crew [240 h] | 123,883.49 |
| 4210 |  | Hall 4: aisle containment framework (1,250 m2) |  | 7d | 2027-08-12 | 2027-08-20 | 4200, 4140, 4160 | 6d | 0d | Fit-Out Crew [1120 h] | 205,048.54 |
|  | 6 | **Hall 4 — Commissioning & handover** |  |  | 2027-08-23 | 2027-12-23 |  |  |  |  |  |
| 4265 |  | Hall 4: ready for tenant fit-out access (white space complete) | milestone | 0d | 2027-08-23 | 2027-08-23 | 4210, 4150 | 77d |  |  |  |
| 4220 |  | Hall 4: L2 static inspection (pre-energisation) |  | 10d | 2027-08-24 | 2027-09-06 | 4115, 4150, 4170, 4180, 4210 | 5d | 0d | Commissioning Team [640 h] | 34,103.61 |
| 4225 |  | Hall 4: L3 component start-up (after energisation) |  | 11d | 2027-09-07 | 2027-09-21 | 4220, 5210 | 5d | 0d | Commissioning Team [704 h] | 34,103.61 |
| 4230 |  | Hall 4: L4 integrated systems test incl. failure-mode demonstrations |  | 10d | 2027-09-22 | 2027-10-05 | 4225, 3230 | 5d | 0d | Commissioning Team [640 h] | 136,414.45 |
| 4240 |  | Hall 4: L5 24 h load-bank test (set-up, 24 h run, strip-out) |  | 5d | 2027-10-06 | 2027-10-12 | 4230 | 5d |  | Commissioning Team [320 h] | 180,261.95 |
| 4245 |  | Explicit time contingency — NordBuild-owned programme contingency before Section 4 (outside-view gate) |  | 35d | 2027-10-20 | 2027-12-08 | 6155, 4240 | 0d |  | Contingency (time) [280 h] |  |
| 4250 |  | Hall 4: as-builts, O&M, training, occupancy inspection, Tenant technical acceptance |  | 10d | 2027-12-09 | 2027-12-22 | 4245, 4265, 6040, 6110, 6120, 6030, 6100 | 0d |  | Site Management [320 h] | 80,590.08 |
| 4260 |  | SECTION 4 TAKING-OVER (Hall 4 + admin/NOC, externals, DH) | milestone | 0d | 2027-12-23 | 2027-12-23 | 4250 | 0d |  |  |  |
|  | 10 | **Shared MEP spine & HV (Section 1)** |  |  | 2026-05-22 | 2027-05-25 |  |  |  |  |  |
| 5010 |  | Spine & substation: excavation in till |  | 22d | 2026-05-22 | 2026-06-23 | 520 | 14d | 0d | Earthworks Crew [5280 h] | 195,937.24 |
| 5340 |  | Fibre route A (620 m, separate trench) |  | 11d | 2026-05-22 | 2026-06-05 | 520 | 262d | 0d | Civil Crew [1408 h] | 149,421.32 |
| 5345 |  | Fibre route B (620 m, separate trench) |  | 11d | 2026-06-08 | 2026-06-23 | 5340 | 262d | 16d | Civil Crew [1408 h] | 149,421.32 |
| 5020 |  | Spine east: rock blasting (generator compound/substation zone, ~35% of 3,213.6 m3) |  | 20d | 2026-06-24 | 2026-08-11 | 335, 5010 | 14d | 0d | Blasting Crew [1920 h] | 165,410.78 |
| 5320 |  | Stormwater, attenuation & oil separators (I.04) |  | 16d | 2026-06-24 | 2026-08-05 | 5010, 417 | 219d | 0d | Civil Crew [2048 h] | 711,530.09 |
| 5330 |  | Foul, water & utility connections (I.05) |  | 13d | 2026-06-24 | 2026-07-31 | 5010 | 249d | 3d | Civil Crew [1664 h] | 436,099.09 |
| 5300 |  | Access road, yard & hardstanding — S1 half of I.01 (4,900 m2) |  | 15d | 2026-08-06 | 2026-08-26 | 5320, 5330, 5345 | 246d | 0d | Civil Crew [1440 h] | 438,623.87 |
| 5030 |  | Spine: pad foundations & ground beams |  | 6d | 2026-08-12 | 2026-08-19 | 5020, 240 | 14d | 0d | Concrete Crew [960 h] | 336,626.19 |
| 5035 |  | Spine: direct-to-rock / rock-socketed foundations (6 nr) |  | 3d | 2026-08-12 | 2026-08-14 | 5020, 240 | 107d | 3d | Piling Crew [288 h] | 222,018.79 |
| 5040 |  | Spine: sub-base, capping & geotextile (4,675 m2) |  | 14d | 2026-08-20 | 2026-09-08 | 5030 | 14d | 0d | Civil Crew [1344 h] | 240,067.26 |
| 5050 |  | Substation & generator-compound RC walls incl. trench waterproofing (640 m3) |  | 26d | 2026-08-20 | 2026-09-24 | 5035, 5030 | 104d | 0d | Concrete Crew [4992 h] | 635,575.11 |
| 5310 |  | Perimeter fence, gates, gatehouse & access control |  | 25d | 2026-08-27 | 2026-09-30 | 5300 | 246d | 170d | Civil Crew [1200 h] | 1,386,566.27 |
| 5045 |  | Spine: ground-bearing slab 250 mm (1,169 m3) |  | 28d | 2026-09-09 | 2026-10-16 | 5040 | 95d | 45d | Concrete Crew [4480 h] | 833,174.59 |
| 5060 |  | Spine: structural steel erection (186 t) |  | 37d | 2026-09-09 | 2026-10-29 | 5040, 465 | 14d | 0d | Structural Steel Crew [4736 h] | 234,812.14 |
| 5065 |  | Spine: roof deck, purlins & steel fire protection |  | 31d | 2026-09-23 | 2026-11-04 | 5060 SS+10d | 50d | 0d | Structural Steel Crew [3968 h] | 473,632.42 |
| 5055 |  | Spine: precast wall panel erection (148 nr = 3,818 m2) |  | 33d | 2026-09-25 | 2026-11-10 | 470, 5060 SS+10d, 5050 | 104d | 0d | Steel & Precast Crew [3168 h] | 130,049.06 |
| 5070 |  | Spine: roof insulation & membrane |  | 32d | 2026-11-05 | 2026-12-18 | 5065 | 50d | 0d | Waterproofing Crew [2048 h] | 749,803.77 |
| 5082 |  | Spine: dry coolers / adiabatic units 10 nr erection |  | 12d | 2026-11-05 | 2026-11-20 | 458, 5065 | 73d | 23d | Mechanical Crew [1728 h] | 399,768.78 |
| 5072 |  | Spine: wall cladding, louvres & doors |  | 57d | 2026-11-11 | 2027-02-03 | 5055, 475, 490 | 180d | 0d | Facade Crew [7296 h] | 1,191,840.16 |
| 5080 |  | Spine: chillers 4 nr set, connect |  | 12d | 2026-12-21 | 2027-01-11 | 457, 5070 | 50d | 0d | Mechanical Crew [1152 h] | 295,642.96 |
| 5084 |  | Spine: pump sets 12 nr, buffer vessels, glycol dosing, water treatment |  | 14d | 2026-12-21 | 2027-01-13 | 5070, 5045 | 50d | 0d | Mechanical Crew [2016 h] | 2,491,237.85 |
| 5160 |  | Spine: earthing, lightning protection, containment, lighting |  | 23d | 2026-12-21 | 2027-01-26 | 5070, 305 | 83d | 58d | Electrical Crew [3680 h] | 1,654,174.37 |
| 5086 |  | Spine: CHW headers & pipework (1,350 m) |  | 39d | 2026-12-28 | 2027-02-22 | 5080 SS+3d, 5084 SS+3d, 5082 | 50d | 0d | Mechanical Crew [4992 h] | 1,906,078.32 |
| 5075 |  | Spine weathertight | milestone | 0d | 2027-02-04 | 2027-02-04 | 5070, 5072 | 180d | 0d |  |  |
| 5090 |  | Spine & ancillary: partitions, linings & plant-room finishes |  | 14d | 2027-02-04 | 2027-02-23 | 5075 | 186d | 93d | Fit-Out Crew [2240 h] | 1,176,048.99 |
| 5092 |  | Spine: fire detection & sprinklers |  | 20d | 2027-02-04 | 2027-03-03 | 5075, 295 | 180d | 87d | Fire Protection Crew [960 h] | 324,052.28 |
| 5088 |  | Spine: pipework insulation, flushing & pressure test |  | 19d | 2027-02-23 | 2027-03-19 | 5086 | 50d | 0d | Insulation Crew [608 h] | 497,468.3 |
| 5110 |  | HV: transformers 2 nr set-down, oil fill, install & HV tests |  | 20d | 2027-03-08 | 2027-04-06 | 425, 5055 | 25d | 0d | Electrical Crew [1280 h] | 332,762.63 |
| 5140 |  | Generators 8 nr: set, connect, acoustic enclosures |  | 18d | 2027-03-16 | 2027-04-12 | 445, 5045 | 47d | 0d | Electrical Crew [1728 h] | 1,111,088.77 |
| 5095 |  | Spine plant L2 static inspection (chillers, pumps, dry coolers) |  | 8d | 2027-03-22 | 2027-04-02 | 5088 | 50d | 25d | Commissioning Team [512 h] | 34,103.61 |
| 5120 |  | HV: 20 kV ring-main switchboard 14 panels install & test |  | 10d | 2027-03-22 | 2027-04-06 | 435, 5055 | 25d | 0d | Electrical Crew [640 h] | 189,505.5 |
| 5130 |  | HV: 110 kV termination, metering & protection testing; DNO inspection |  | 10d | 2027-04-07 | 2027-04-20 | 5110, 5120 | 25d | 0d | Electrical Crew [320 h] | 1,744,235.99 |
| 5150 |  | Generator paralleling, ATS, controls, bulk fuel storage |  | 19d | 2027-04-13 | 2027-05-10 | 5140, 5320 | 47d | 22d | Electrical Crew [912 h] | 2,611,131.72 |
| 5200 |  | DNO energisation of 110 kV / 20 kV (needs notice, DNO date, protection approval) |  | 3d | 2027-04-21 | 2027-04-23 | 5130, 5160, 355, 350 | 25d | 0d | DNO (third party) [24 h] |  |
| 5210 |  | Post-energisation HV functional tests & metering commissioning |  | 10d | 2027-04-26 | 2027-05-10 | 5200 | 25d | 0d | Commissioning Team [320 h] |  |
| 5096 |  | Spine plant L3 start-up (after energisation) |  | 11d | 2027-05-11 | 2027-05-25 | 5095, 5210 | 25d | 0d | Commissioning Team [704 h] | 34,103.61 |

Notes:
- 4190: Duration Basis: hist-prj-001-act-201 / Notes: [A] PART 11.25 + PLANTFIN 25 m2/md / Expenses: Hall 4: partitions, linings & plant-room finishes — Materials/Plant/Sublet 282326
- 4200: Duration Basis: hist-prj-001-act-203 / Notes: [A] RAF 58.33 m2/md / Expenses: Hall 4: anti-static / sealed floor finish (1,250 m2) — Materials/Plant/Sublet 123883
- 4210: Duration Basis: hist-prj-001-act-201 / Notes: [B] PART 11.25 m2/md proxy / Expenses: Hall 4: aisle containment framework (1,250 m2) — Materials/Plant/Sublet 205049
- 4265: Notes: [M] compare TA Month 20
- 4220: Duration Basis: hist-prj-001-act-217 / Notes: [C] analog electrical testing 8 d + HVAC cx 10 d; +15% / Expenses: Hall 4: L2 static inspection (pre-energisation) — Materials/Plant/Sublet 34103.6
- 4225: Duration Basis: hist-prj-001-act-215 / Notes: [C] analog HVAC commissioning 10 d +15% / Expenses: Hall 4: L3 component start-up (after energisation) — Materials/Plant/Sublet 34103.6
- 4230: Notes: [D] PDC-SCH-007 L4 25 d for S2-S4 combined; analog 8 d +25% / Expenses: Hall 4: L4 integrated systems test incl. failure-mode demonstrations — Materials/Plant/Sublet 136414
- 4240: Notes: [D] ER L5 24 h; permit load-bank hours; 5 d judgement / Expenses: Hall 4: L5 24 h load-bank test (set-up, 24 h run, strip-out) — Materials/Plant/Sublet 180262
- 4245: Notes: [E] explicit contingency line (never smeared into durations); sized to the float between the computed S4 and the contract date
- 4250: Notes: [C] analog authority inspection + occupancy permit; final inspection incl admin/externals / Expenses: Hall 4: as-builts, O&M, training, occupancy inspection, Tenant technical acceptance — Materials/Plant/Sublet 80590.1
- 4260: Notes: [M] contract 2028-01-02
- 5010: Duration Basis: hist-prj-001-act-132 / Notes: [A] EARTH 12.50 m3/md; raw 18.7 d +15% / Expenses: Spine & substation: excavation in till — Materials/Plant/Sublet 195937
- 5340: Duration Basis: hist-prj-001-act-157 / Notes: [B] TRENCH 4.17 lm/md; raw 9.3 d +15% / Expenses: Fibre route A (620 m, separate trench) — Materials/Plant/Sublet 149421
- 5345: Duration Basis: hist-prj-001-act-157 / Notes: [B] TRENCH 4.17 lm/md; raw 9.3 d +15% / Expenses: Fibre route B (620 m, separate trench) — Materials/Plant/Sublet 149421
- 5020: Notes: [D] No history for blasting; PDC-SCH-001 55 d/3,213.6 m3 x 35.5% / Expenses: Spine east: rock blasting (generator compound/substation zone, ~35% of 3,213.6 m3) — Materials/Plant/Sublet 165411
- 5320: Duration Basis: hist-prj-001-act-157 / Notes: [B] TRENCH 4.17 lm/md; raw 13.5 d +15% / Expenses: Stormwater, attenuation & oil separators (I.04) — Materials/Plant/Sublet 711530
- 5330: Duration Basis: hist-prj-001-act-157 / Notes: [B] TRENCH 4.17 lm/md; raw 10.5 d +15% / Expenses: Foul, water & utility connections (I.05) — Materials/Plant/Sublet 436099
- 5300: Duration Basis: hist-prj-001-act-161 / Notes: [A] SUBB 33.33 m2/md; raw 12.2 d +15% / Expenses: Access road, yard & hardstanding — S1 half of I.01 (4,900 m2) — Materials/Plant/Sublet 438624
- 5030: Duration Basis: hist-prj-001-act-140 / Notes: [B] FDN 365 m3 RC @3.75/md; 4.9 d +15% / Expenses: Spine: pad foundations & ground beams — Materials/Plant/Sublet 336626
- 5035: Duration Basis: hist-prj-001-act-134 / Notes: [B] PILE 0.28 piles/md; raw 1.8 d +15% / Expenses: Spine: direct-to-rock / rock-socketed foundations (6 nr) — Materials/Plant/Sublet 222019
- 5040: Duration Basis: hist-prj-001-act-161 / Notes: [A] SUBB 33.33 m2/md; raw 11.7 d +15% / Expenses: Spine: sub-base, capping & geotextile (4,675 m2) — Materials/Plant/Sublet 240067
- 5050: Duration Basis: hist-prj-001-act-144 / Notes: [A] WALL 1.23 m3 RC/md; raw 21.8 d +15% / Expenses: Substation & generator-compound RC walls incl. trench waterproofing (640 m3) — Materials/Plant/Sublet 635575
- 5310: Duration Basis: hist-prj-001-act-126 / Notes: [D] PDC-SCH-008 fence/gatehouse 25 d; analog site facilities 5 d / Expenses: Perimeter fence, gates, gatehouse & access control — Materials/Plant/Sublet 1386566
- 5045: Duration Basis: hist-prj-001-act-143 / Notes: [B] SLAB 2.64 m3/md; raw 22.1 d +25% winter / Expenses: Spine: ground-bearing slab 250 mm (1,169 m3) — Materials/Plant/Sublet 833175
- 5060: Notes: [D] Scaled from PDC-SCH-002 22 d per 112.32 t; no history t rate / Expenses: Spine: structural steel erection (186 t) — Materials/Plant/Sublet 234812
- 5065: Duration Basis: hist-prj-004-act-151 / Notes: [B] DECK 18.75 m2/md + intumescent proxy / Expenses: Spine: roof deck, purlins & steel fire protection — Materials/Plant/Sublet 473632
- 5055: Duration Basis: hist-prj-001-act-146 / Notes: [B] PLANK 11.11 m2/md proxy; raw 28.6 d +15% / Expenses: Spine: precast wall panel erection (148 nr = 3,818 m2) — Materials/Plant/Sublet 130049
- 5070: Duration Basis: hist-prj-001-act-153 / Notes: [A] ROOFM 37.5 + ROOFI 60 m2/md / Expenses: Spine: roof insulation & membrane — Materials/Plant/Sublet 749804
- 5082: Duration Basis: hist-prj-001-act-172 / Notes: [C] analog 5 d/set x10/3 crews +15% / Expenses: Spine: dry coolers / adiabatic units 10 nr erection — Materials/Plant/Sublet 399769
- 5072: Duration Basis: hist-prj-003-act-149 / Notes: [B] FACADE 7.14 m2/md; 42.7 d +25% +3 d / Expenses: Spine: wall cladding, louvres & doors — Materials/Plant/Sublet 1191840
- 5080: Duration Basis: hist-prj-001-act-172 / Notes: [C] analog chiller install 5 d/set x4/2 crews +15% (history LS, no qty) / Expenses: Spine: chillers 4 nr set, connect — Materials/Plant/Sublet 295643
- 5084: Duration Basis: hist-prj-001-act-172 / Notes: [C] analog 5 d/set x12/3 crews +15% / Expenses: Spine: pump sets 12 nr, buffer vessels, glycol dosing, water treatment — Materials/Plant/Sublet 2491238
- 5160: Duration Basis: hist-prj-001-act-183 / Notes: [C] analog cable trays 25 d x0.8 +15% / Expenses: Spine: earthing, lightning protection, containment, lighting — Materials/Plant/Sublet 1654174
- 5086: Duration Basis: hist-prj-001-act-168 / Notes: [A] PIPE 2.50 lm/md; raw 33.8 d +15% / Expenses: Spine: CHW headers & pipework (1,350 m) — Materials/Plant/Sublet 1906078
- 5075: Notes: [M] milestone
- 5090: Duration Basis: hist-prj-001-act-201 / Notes: [A] PART 11.25 + PLANTFIN 25 m2/md / Expenses: Spine & ancillary: partitions, linings & plant-room finishes — Materials/Plant/Sublet 1176049
- 5092: Duration Basis: hist-prj-001-act-45 / Notes: [D] PDC-SCH-007 detection 25 d per hall pair, scaled to spine / Expenses: Spine: fire detection & sprinklers — Materials/Plant/Sublet 324052
- 5088: Duration Basis: hist-prj-003-act-172 / Notes: [C] analog site pipework insulation 8 d x2 +15% / Expenses: Spine: pipework insulation, flushing & pressure test — Materials/Plant/Sublet 497468
- 5110: Duration Basis: hist-prj-001-act-180 / Notes: [C] analog 5 d/set x2 +100% margin (HV scale uplift, judgement) / Expenses: HV: transformers 2 nr set-down, oil fill, install & HV tests — Materials/Plant/Sublet 332763
- 5140: Duration Basis: hist-prj-001-act-182 / Notes: [C] analog generator install 3 d/set x8/2 crews +50% / Expenses: Generators 8 nr: set, connect, acoustic enclosures — Materials/Plant/Sublet 1111089
- 5095: Duration Basis: hist-prj-001-act-215 / Notes: [C] analog HVAC commissioning 10 d x1.5 +25% / Expenses: Spine plant L2 static inspection (chillers, pumps, dry coolers) — Materials/Plant/Sublet 34103.6
- 5120: Duration Basis: hist-prj-001-act-180 / Notes: [C] analog 5 d +100% margin / Expenses: HV: 20 kV ring-main switchboard 14 panels install & test — Materials/Plant/Sublet 189506
- 5130: Duration Basis: hist-prj-001-act-217 / Notes: [C] analog electrical systems testing 8 d +25% / Expenses: HV: 110 kV termination, metering & protection testing; DNO inspection — Materials/Plant/Sublet 1744236
- 5150: Duration Basis: hist-prj-001-act-184 / Notes: [C] analog feeder cables 10 d x1.5 +25% (no direct analog) / Expenses: Generator paralleling, ATS, controls, bulk fuel storage — Materials/Plant/Sublet 2611132
- 5200: Notes: [D] PDC-GC-001 s7: energisation in outage window; 3 d judgement
- 5210: Duration Basis: hist-prj-001-act-217 / Notes: [C] analog electrical systems testing 8 d +15%
- 5096: Duration Basis: hist-prj-001-act-215 / Notes: [C] analog HVAC commissioning 10 d +15% / Expenses: Spine plant L3 start-up (after energisation) — Materials/Plant/Sublet 34103.6

| ID | WBS | Activity | Duration | Start | Finish | Predecessors | Total float | Free float | Resources | Cost |
| --- | --- | --- | --- | --- | --- | --- | --- | --- | --- | --- |
|  | 11 | **Admin/NOC, district heating & external works (Section 4)** |  | 2026-05-22 | 2027-10-19 |  |  |  |  |  |
| 6010 |  | Admin/NOC: excavation, foundations & ground slab | 20d | 2026-05-22 | 2026-06-18 | 520, 240 | 273d | 35d | Earthworks Crew [2560 h] | 400,768.39 |
| 6020 |  | Admin/NOC: wall cladding, roof & doors | 21d | 2026-08-31 | 2026-09-28 | 6010, 490 | 238d | 0d | Facade Crew [2688 h] | 542,232.54 |
| 6030 |  | Admin/NOC fit-out: ceilings, finishes, joinery, signage | 40d | 2026-09-29 | 2026-11-23 | 6020, 305, 413 | 238d | 0d | Fit-Out Crew [6400 h] | 2,081,004.49 |
| 6040 |  | Admin/NOC: BMS/DCIM head-end & NOC systems | 40d | 2026-10-13 | 2026-12-07 | 6030 SS+10d, 480 | 238d |  | BMS Crew [1280 h] | 711,515.92 |
| 6130 |  | WHR plant 4 MW: set, connect, controls | 15d | 2027-03-22 | 2027-04-13 | 460, 5088 | 65d | 0d | Mechanical Crew [960 h] | 506,683.69 |
| 6140 |  | Heat-recovery pipework to boundary chamber (260 m) + chamber & meter skid | 13d | 2027-03-25 | 2027-04-14 | 6130 SS+3d | 65d | 0d | Civil Crew [1664 h] | 322,294.21 |
| 6145 |  | DH: as-built docs & control philosophy to Offtaker (>=8 weeks before test) | 39d | 2027-04-15 | 2027-06-09 | 6140 | 65d |  | Site Management [624 h] |  |
| 6146 |  | DH: 20 working-day notice of 72 h test | 20d | 2027-04-15 | 2027-05-13 | 6140 | 84d |  | Site Management [160 h] |  |
| 6100 |  | Permanent roads, parking & hardstanding — remaining half of I.01 (4,900 m2) | 15d | 2027-06-07 | 2027-06-28 | 4080, 5310 | 76d | 0d | Civil Crew [1440 h] | 438,623.87 |
| 6110 |  | External lighting & site small power | 12d | 2027-06-14 | 2027-06-30 | 6100 SS+5d | 99d |  | Electrical Crew [576 h] | 304,121.73 |
| 6120 |  | Landscaping, soft planting & tree replacement (growing-season works) | 25d | 2027-06-29 | 2027-08-23 | 6100 | 76d |  | Landscaping Crew [800 h] | 212,311.4 |
| 6150 |  | DH: 72 h witnessed performance test (>=4 MW, >=70 C; heating season only) | 3d | 2027-10-01 | 2027-10-05 | 6145, 6146, 360, 361, 3240 | 0d |  | Commissioning Team [96 h] |  |
| 6155 |  | DH: test certificate issued (10 working days) | 10d | 2027-10-06 | 2027-10-19 | 6150 | 0d |  | Offtaker (third party) [80 h] |  |
|  | 12 | **Preliminaries & allowances** |  | 2026-03-02 | 2027-10-25 |  |  |  |  |  |
| 8060 |  | Design development & risk allowances (all sections) - cost-only hammock | 388d | 2026-03-02 | 2027-10-25 | 100 SS | 41d |  | Contingency (cost only) [3104 h] | 2,691,262.14 |
| 8030 |  | Statutory supervisors: responsible site manager, KVV, IV (A.08) | 377d | 2026-03-16 | 2027-10-22 | 325 SS | 42d |  | Site Management [9048 h] | 203,206.82 |
| 8010 |  | Site management, supervision & QA/QC staff (A.02) | 372d | 2026-03-23 | 2027-10-22 | 510 SS | 42d |  | Site Management [65472 h] | 2,043,679.98 |
| 8020 |  | Site security during construction (A.06) | 372d | 2026-03-23 | 2027-10-22 | 510 SS | 42d |  | Security Guards [11904 h] | 308,680.83 |
| 8050 |  | Environmental controls, vibration & noise monitoring (A.07) | 230d | 2026-04-15 | 2027-04-05 | 520 SS | 169d |  | Environmental Crew [3680 h] | 256,427.65 |
| 8040 |  | Tower & mobile cranage, hoisting & access (A.04) | 160d | 2026-09-08 | 2027-04-27 | 1040 SS | 153d |  | Crane Crew [3840 h] | 948,298.47 |

Notes:
- 6010: Duration Basis: hist-prj-001-act-132 / Notes: [B] EARTH 1875 m3 12.5/md + FDN + SLAB summed / Expenses: Admin/NOC: excavation, foundations & ground slab — Materials/Plant/Sublet 400768
- 6020: Duration Basis: hist-prj-003-act-149 / Notes: [B] FACADE 1139 m2 7.14/md + roof + deck summed / Expenses: Admin/NOC: wall cladding, roof & doors — Materials/Plant/Sublet 542233
- 6030: Notes: [D] PDC-SCH-004 admin fit-out 40 d (stated) / Expenses: Admin/NOC fit-out: ceilings, finishes, joinery, signage — Materials/Plant/Sublet 2081004
- 6040: Notes: [D] PDC-SCH-007 BMS head end 40 d (stated) / Expenses: Admin/NOC: BMS/DCIM head-end & NOC systems — Materials/Plant/Sublet 711516
- 6130: Duration Basis: hist-prj-001-act-172 / Notes: [C] analog plant install 5 d/set x3 scale +15% / Expenses: WHR plant 4 MW: set, connect, controls — Materials/Plant/Sublet 506684
- 6140: Duration Basis: hist-prj-001-act-157 / Notes: [B] TRENCH 4.17 lm/md 3.9 d +15% + 8 d chamber/skid (judgement) / Expenses: Heat-recovery pipework to boundary chamber (260 m) + chamber & meter skid — Materials/Plant/Sublet 322294
- 6145: Notes: [D] PDC-DH-001 s2.4: 8 weeks before test
- 6146: Notes: [D] PDC-DH-001 s6.2: 20 working days notice
- 6100: Duration Basis: hist-prj-001-act-161 / Notes: [A] SUBB 33.33 m2/md; raw 12.2 d +15% / Expenses: Permanent roads, parking & hardstanding — remaining half of I.01 (4,900 m2) — Materials/Plant/Sublet 438624
- 6110: Duration Basis: hist-prj-003-act-181 / Notes: [C] analog common area lighting 10 d +15% / Expenses: External lighting & site small power — Materials/Plant/Sublet 304122
- 6120: Notes: [D] PDC-SCH-008 landscaping 25 d (stated); I.08 lump sum / Expenses: Landscaping, soft planting & tree replacement (growing-season works) — Materials/Plant/Sublet 212311
- 6150: Notes: [D] PDC-DH-001 s6.1: 72 h
- 6155: Notes: [D] PDC-DH-001 s6.5: certificate 10 wd
- 8060: Notes: [E] allowance lines held separately, not pro-rated / Expenses: Design development & risk allowances (all sections) - cost-only hammock — Materials/Plant/Sublet 2691262
- 8030: Notes: [E] BOQ A.08; hammock over works / Expenses: Statutory supervisors: responsible site manager, KVV, IV (A.08) — Materials/Plant/Sublet 203207
- 8010: Notes: [E] BOQ A.02 22 months; hammock, duration below makespan so non-critical / Expenses: Site management, supervision & QA/QC staff (A.02) — Materials/Plant/Sublet 2043680
- 8020: Notes: [E] BOQ A.06 22 months; hammock / Expenses: Site security during construction (A.06) — Materials/Plant/Sublet 308681
- 8050: Notes: [E] BOQ A.07; hammock from clearance / Expenses: Environmental controls, vibration & noise monitoring (A.07) — Materials/Plant/Sublet 256428
- 8040: Notes: [E] BOQ A.04; hammock from first steel erection / Expenses: Tower & mobile cranage, hoisting & access (A.04) — Materials/Plant/Sublet 948298
