# TOWER-A

Schedule from Primavera P6, 2026-03-02 to 2026-04-06, data date 2026-04-01, costs in EUR, A marks actual dates.
EPS: Group / Middle East / Buildings
Must finish by 2026-04-06

## Calendars

- Site 5-Day: Mon-Fri 08:00-12:00, 13:00-17:00; Sat-Sun off. Exceptions (off unless hours are given): 2026-04-06.
- Night Shift 7-Day: Mon-Sun 08:00-12:00, 13:00-17:00.

## Resources

| Resource | Group | Rate |
| --- | --- | --- |
| Piling Crew | labor | 45 |
| Piling Rig | equipment | 180 |
| Concrete C35 | material | 95 |

## Schedule

| ID | WBS | Activity | Type | Duration | Start | Finish | Predecessors | Complete | Remaining | Total float | Free float | Constraint | Calendar | Resources | Cost | Actual cost | Phase | Contract Ref | Permit No |
| --- | --- | --- | --- | --- | --- | --- | --- | --- | --- | --- | --- | --- | --- | --- | --- | --- | --- | --- | --- |
|  | SUB | **Substructure** |  |  | 2026-03-02 | 2026-04-06 |  |  |  |  |  |  |  |  |  |  |  |  |  |
| A1030 |  | Pile caps zone 1 |  | 10d | 2026-03-19 | 2026-04-01 | A1020 SS+2d |  |  | 2d | 0d | start on or after 2026-03-19 |  | Concrete C35 [320] | 42,400 |  |  |  |  |
| M1000 |  | Substructure complete | milestone | 0d | 2026-04-02 | 2026-04-02 | A1030 |  |  | 2d |  |  |  |  |  |  |  |  |  |
|  | PIL | **Piling** |  |  | 2026-03-02 | 2026-04-06 |  |  |  |  |  |  |  |  |  |  |  |  |  |
| A1010 |  | Mobilise piling rig |  | 5d | 2026-03-02 A | 2026-03-06 A |  | 100% |  |  |  |  |  |  | 5,000 | 5,000 | Enabling |  |  |
| A1020 |  | Drive piles zone 1 |  | 10d | 2026-03-07 A | 2026-04-06 | A1010 | 40% | 6d | 14d | 10d |  | Night Shift 7-Day | Piling Crew [600 h]; Piling Rig [100 h] | 43,500 | 17,400 | Enabling | CTR-0042 | 44 |

Notes:
- A1030: Expenses: Formwork hire 12000
- A1010: Expenses: Site setup 5000
- A1020: Notes: Night shift by permit 44/26 / Steps: Set out (done); Drive

# tower_a_bl1

Schedule from Primavera P6, 2026-03-02 to 2026-03-14, data date 2026-04-01, A marks actual dates.
Must finish by 2026-04-06

## Calendars

- Site 5-Day: Mon-Fri 08:00-12:00, 13:00-17:00; Sat-Sun off.
- Night Shift 7-Day: Mon-Sun 08:00-12:00, 13:00-17:00.

## Schedule

| ID | Activity | Duration | Start | Finish | Complete | Remaining | Total float | Free float | Calendar |
| --- | --- | --- | --- | --- | --- | --- | --- | --- | --- |
| A1010 | Mobilise piling rig | 5d | 2026-03-02 A | 2026-03-06 A | 100% |  |  |  |  |
| A1020 | Drive piles zone 1 | 8d | 2026-03-07 A | 2026-03-14 | 40% | 4.8d | 14d | 10d | Night Shift 7-Day |
