# FEED OF PRODUCTION INFRASTRUCTURE FOR BADRA OILFIELD

Schedule from Primavera P6, 2012-05-27 to 2013-06-30, data date 2012-03-06, costs in EGP.
Must finish by 2013-07-01

## Calendars

- 7-Day Workweek: Mon-Sun 08:00-12:00, 13:00-17:00.

## Resources

| Resource | Group |
| --- | --- |
| CARPENTER | labor |
| Brickwork Labor | labor |
| STEEL LABOUR | labor |
| finishes worker | labor |
| MEP WORKER | labor |

## Schedule

| ID | WBS | Activity | Type | Duration | Start | Finish | Predecessors | Total float | Free float | Cost |
| --- | --- | --- | --- | --- | --- | --- | --- | --- | --- | --- |
|  | GENERAL | **GENERAL** |  |  | 2012-05-27 | 2013-06-30 |  |  |  |  |
|  | 1 | **MILESTONES** |  |  | 2012-05-27 | 2013-06-30 |  |  |  |  |
| A1080 |  | Commencement date | milestone | 0d | 2012-05-27 | 2012-05-27 |  | 0d |  |  |
| A8500 |  | All equipment &material for vehicle maintenance&fuel station building passed incoming control | milestone | 0d | 2012-10-29 | 2012-10-29 | A5890 | 245d |  |  |
| A8480 |  | Laboratory equipment passed incomin control | milestone | 0d | 2012-12-17 | 2012-12-17 | A6570 | 196d |  |  |
| A8490 |  | All equipment &material for main control building passed incoming control | milestone | 0d | 2012-12-17 | 2012-12-17 | A6530 | 196d |  |  |
| A1170 |  | Detail engineering | milestone | 0d | 2012-12-19 | 2012-12-19 | A7690, A7600 | 193d |  |  |
| A8520 |  | Construction completed in main control building | milestone | 0d | 2013-03-21 | 2013-03-21 | A5630 | 101d |  |  |
| A8530 |  | Construction completed in vehicle maintenance building&fuel station | milestone | 0d | 2013-04-07 | 2013-04-07 | A5270 | 84d |  |  |
| A8470 |  | Procurement | milestone | 0d | 2013-04-20 | 2013-04-20 | A6660 | 72d |  |  |
| A8510 |  | Mechanical completion,construction completed | milestone | 0d | 2013-05-15 | 2013-05-15 | A3760 | 46d |  |  |
| A1110 |  | Final completion | milestone | 0d | 2013-06-30 | 2013-06-30 | A7750, A7700, A7720, A7710, A7730, A7740 | 0d |  |  |
| A8540 |  | Provisional acceptance,ready to startup | milestone | 0d | 2013-06-30 | 2013-06-30 | A7750 | 0d |  |  |
|  | 2 | **MOBILIZTION&DEMOBILIZATION** |  |  | 2012-05-27 | 2013-06-30 |  |  |  |  |
| A1060 |  | Mobilization |  | 85d | 2012-05-27 | 2012-08-19 | A1080 | 0d |  | 100 |
| A8550 |  | Soil investegation report |  | 14d | 2012-06-06 | 2012-06-19 | A1060 SS+10d | 376d |  |  |
| A1070 |  | Demobilization |  | 15d | 2013-06-16 | 2013-06-30 | A1110 FF | 0d |  |  |
|  | ENGINEERING | **ENGINEERING** |  |  | 2012-05-27 | 2012-12-20 |  |  |  |  |
| A7600 |  | Project management&services |  | 207d | 2012-05-27 | 2012-12-19 | A1060 SS | 193d | 0d | 30 |
| A7620 |  | Civil &structural steel |  | 207d | 2012-05-27 | 2012-12-19 | A1060 SS | 193d |  | 100 |
| A7670 |  | Architectural& buildings |  | 205d | 2012-05-27 | 2012-12-17 | A1060 SS | 195d |  | 150 |
| A7690 |  | Evaporation bond |  | 60d | 2012-05-27 | 2012-07-25 | A1060 SS | 340d | 147d | 100 |
| A7630 |  | Mechnical equipment |  | 178d | 2012-06-26 | 2012-12-20 | A1060 SS+30d | 192d |  | 100 |
| A7640 |  | Plant&piping |  | 178d | 2012-06-26 | 2012-12-20 | A1060 SS+30d | 192d |  | 100 |
| A7650 |  | Electrical |  | 170d | 2012-06-26 | 2012-12-12 | A1060 SS+30d | 200d |  | 120 |
| A7660 |  | Instrumintation,automation&telecommunication |  | 150d | 2012-06-26 | 2012-11-22 | A1060 SS+30d | 220d |  | 100 |
| A7680 |  | HVAC |  | 150d | 2012-06-26 | 2012-11-22 | A1060 SS+30d | 220d |  | 100 |
| A7610 |  | Process |  | 90d | 2012-07-11 | 2012-10-08 | A1060 SS+45d | 265d |  | 100 |

Notes:
- A1060: Expenses: (New Expense Item) 100
- A7600: Expenses: (New Expense Item) 30
- A7620: Expenses: (New Expense Item) 100
- A7670: Expenses: (New Expense Item) 150
- A7690: Expenses: (New Expense Item) 100
- A7630: Expenses: (New Expense Item) 100
- A7640: Expenses: (New Expense Item) 100
- A7650: Expenses: (New Expense Item) 120
- A7660: Expenses: (New Expense Item) 100
- A7680: Expenses: (New Expense Item) 100
- A7610: Expenses: (New Expense Item) 100

| ID | WBS | Activity | Type | Duration | Start | Finish | Predecessors | Total float | Free float | Cost |
| --- | --- | --- | --- | --- | --- | --- | --- | --- | --- | --- |
|  | PROCUREMENT | **PROCUREMENT** |  |  | 2012-05-27 | 2013-04-20 |  |  |  |  |
|  | 1 | **Pipes&fittings for water&sanitation systems with connection** |  |  | 2012-10-19 | 2013-03-10 |  |  |  |  |
| A5840 |  | Place order for bulk material | milestone | 0d | 2012-10-19 | 2012-10-19 | A1060 FS+60d | 113d | 0d | 30 |
| A5850 |  | material received@construction site | milestone | 0d | 2013-02-08 | 2013-02-08 | A5840 FS+112d | 113d | 0d | 70 |
| A5860 |  | All material received&p.o closed | milestone | 0d | 2013-03-10 | 2013-03-10 | A5850 FS+30d | 113d |  | 100 |
|  | 2 | **Material&equipment for vehicle maintenance building** |  |  | 2012-08-30 | 2012-11-26 |  |  |  |  |
| A5870 |  | Issue mr for approval | milestone | 0d | 2012-08-30 | 2012-08-30 | A1060 FS+10d | 217d | 0d | 13 |
| A5880 |  | Issue Po | milestone | 0d | 2012-09-13 | 2012-09-13 | A5870 FS+14d | 217d | 0d | 25 |
| A5890 |  | Material received and inspected@ site | milestone | 0d | 2012-10-29 | 2012-10-29 | A5880 FS+46d | 217d | 0d | 175 |
| A5900 |  | All spare parts rec'd | milestone | 0d | 2012-11-26 | 2012-11-26 | A5890 FS+28d | 217d |  | 37 |
|  | 12 | **Material&equipment for Dog House** |  |  | 2012-10-19 | 2013-04-13 |  |  |  |  |
| A6270 |  | Issue mr for approval | milestone | 0d | 2012-10-19 | 2012-10-19 | A1060 FS+60d | 79d | 0d | 5 |
| A6280 |  | Issue Po | milestone | 0d | 2012-11-16 | 2012-11-16 | A6270 FS+28d | 79d | 0d | 10 |
| A6290 |  | Material received and inspected@ site | milestone | 0d | 2013-03-16 | 2013-03-16 | A6280 FS+120d | 79d | 0d | 70 |
| A6300 |  | All spare parts rec'd | milestone | 0d | 2013-04-13 | 2013-04-13 | A6290 FS+28d | 79d |  | 15 |
|  | 14 | **Material&equipment for Secondary Gate House** |  |  | 2012-10-19 | 2013-02-02 |  |  |  |  |
| A6350 |  | Issue mr for approval | milestone | 0d | 2012-10-19 | 2012-10-19 | A1060 FS+60d | 149d | 0d | 8 |
| A6360 |  | Issue Po | milestone | 0d | 2012-11-16 | 2012-11-16 | A6350 FS+28d | 149d | 0d | 15 |
| A6370 |  | Material received and inspected@ site | milestone | 0d | 2013-01-05 | 2013-01-05 | A6360 FS+50d | 149d | 0d | 105 |
| A6380 |  | All spare parts rec'd | milestone | 0d | 2013-02-02 | 2013-02-02 | A6370 FS+28d | 149d |  | 22 |
|  | 26 | **Material&equipment for Plant area secondary gate house** |  |  | 2012-10-19 | 2013-02-12 |  |  |  |  |
| A7430 |  | Issue mr for approval | milestone | 0d | 2012-10-19 | 2012-10-19 | A1060 FS+60d | 139d | 0d | 7 |
| A7440 |  | Issue Po | milestone | 0d | 2012-11-16 | 2012-11-16 | A7430 FS+28d | 139d | 0d | 15 |
| A7450 |  | Material received and inspected@ site | milestone | 0d | 2013-01-15 | 2013-01-15 | A7440 FS+60d | 139d | 0d | 105 |
| A7460 |  | All spare parts rec'd | milestone | 0d | 2013-02-12 | 2013-02-12 | A7450 FS+28d | 139d |  | 23 |

Notes:
- A5840: Expenses: (New Expense Item) 30
- A5850: Expenses: (New Expense Item) 70
- A5860: Expenses: (New Expense Item) 100
- A5870: Expenses: (New Expense Item) 13
- A5880: Expenses: (New Expense Item) 25
- A5890: Expenses: (New Expense Item) 175
- A5900: Expenses: (New Expense Item) 37
- A6270: Expenses: (New Expense Item) 5
- A6280: Expenses: (New Expense Item) 10
- A6290: Expenses: (New Expense Item) 70
- A6300: Expenses: (New Expense Item) 15
- A6350: Expenses: (New Expense Item) 8
- A6360: Expenses: (New Expense Item) 15
- A6370: Expenses: (New Expense Item) 105
- A6380: Expenses: (New Expense Item) 22
- A7430: Expenses: (New Expense Item) 7
- A7440: Expenses: (New Expense Item) 15
- A7450: Expenses: (New Expense Item) 105
- A7460: Expenses: (New Expense Item) 23

| ID | WBS | Activity | Type | Duration | Start | Finish | Predecessors | Total float | Free float | Cost |
| --- | --- | --- | --- | --- | --- | --- | --- | --- | --- | --- |
|  | 15 | **Material&equipment for Administration Training and canteen Building** |  |  | 2012-10-19 | 2013-01-25 |  |  |  |  |
| A6390 |  | Issue mr for approval | milestone | 0d | 2012-10-19 | 2012-10-19 | A1060 FS+60d | 157d | 0d | 20 |
| A6400 |  | Issue Po | milestone | 0d | 2012-11-16 | 2012-11-16 | A6390 FS+28d | 157d | 0d | 40 |
| A6410 |  | Material received and inspected@ site | milestone | 0d | 2012-12-28 | 2012-12-28 | A6400 FS+42d | 157d | 0d | 280 |
| A6420 |  | All spare parts rec'd | milestone | 0d | 2013-01-25 | 2013-01-25 | A6410 FS+28d | 157d |  | 60 |
|  | 20 | **Material&equipment for Workshop warehouse, materials shelter** |  |  | 2012-10-19 | 2013-02-02 |  |  |  |  |
| A6590 |  | Issue mr for approval | milestone | 0d | 2012-10-19 | 2012-10-19 | A1060 FS+60d | 149d | 0d | 17.5 |
| A6600 |  | Issue Po | milestone | 0d | 2012-11-16 | 2012-11-16 | A6590 FS+28d | 149d | 0d | 35 |
| A6610 |  | Material received and inspected@ site | milestone | 0d | 2013-01-05 | 2013-01-05 | A6600 FS+50d | 149d | 0d | 245 |
| A6620 |  | All spare parts rec'd | milestone | 0d | 2013-02-02 | 2013-02-02 | A6610 FS+28d | 149d |  | 52 |
|  | 28 | **Instrumintations materials&equipment** |  |  | 2012-10-19 | 2013-03-10 |  |  |  |  |
| A7510 |  | Place order for bulk material | milestone | 0d | 2012-10-19 | 2012-10-19 | A1060 FS+60d | 113d | 0d | 23 |
| A7520 |  | material received@construction site | milestone | 0d | 2013-02-08 | 2013-02-08 | A7510 FS+112d | 113d | 0d | 52 |
| A7530 |  | All material received&p.o closed | milestone | 0d | 2013-03-10 | 2013-03-10 | A7520 FS+30d | 113d |  | 75 |
|  | 30 | **Hvac interconnection materials&equipment** |  |  | 2012-10-19 | 2013-03-10 |  |  |  |  |
| A7570 |  | Place order for bulk material | milestone | 0d | 2012-10-19 | 2012-10-19 | A1060 FS+60d | 113d | 0d | 15 |
| A7580 |  | material received@construction site | milestone | 0d | 2013-02-08 | 2013-02-08 | A7570 FS+112d | 113d | 0d | 35 |
| A7590 |  | All material received&p.o closed | milestone | 0d | 2013-03-10 | 2013-03-10 | A7580 FS+30d | 113d |  | 50 |
|  | 27 | **Material&equipment for Electrica; equipment&cables** |  |  | 2012-10-19 | 2013-03-24 |  |  |  |  |
| A7470 |  | Issue mr for approval | milestone | 0d | 2012-10-19 | 2012-10-19 | A1060 FS+60d | 99d | 0d | 9 |
| A7480 |  | Issue Po | milestone | 0d | 2012-11-16 | 2012-11-16 | A7470 FS+28d | 99d | 0d | 17 |
| A7490 |  | Material received and inspected@ site | milestone | 0d | 2013-02-24 | 2013-02-24 | A7480 FS+100d | 99d | 0d | 119 |
| A7500 |  | All spare parts rec'd | milestone | 0d | 2013-03-24 | 2013-03-24 | A7490 FS+28d | 99d |  | 26 |
|  | 16 | **Material&equipment for Security and Safety Induction Center** |  |  | 2012-10-19 | 2013-01-23 |  |  |  |  |
| A6430 |  | Issue mr for approval | milestone | 0d | 2012-10-19 | 2012-10-19 | A1060 FS+60d | 159d | 0d | 10 |
| A6440 |  | Issue Po | milestone | 0d | 2012-11-16 | 2012-11-16 | A6430 FS+28d | 159d | 0d | 20 |
| A6450 |  | Material received and inspected@ site | milestone | 0d | 2012-12-26 | 2012-12-26 | A6440 FS+40d | 159d | 0d | 140 |
| A6460 |  | All spare parts rec'd | milestone | 0d | 2013-01-23 | 2013-01-23 | A6450 FS+28d | 159d |  | 30 |

Notes:
- A6390: Expenses: (New Expense Item) 20
- A6400: Expenses: (New Expense Item) 40
- A6410: Expenses: (New Expense Item) 280
- A6420: Expenses: (New Expense Item) 60
- A6590: Expenses: (New Expense Item) 17.5
- A6600: Expenses: (New Expense Item) 35
- A6610: Expenses: (New Expense Item) 245
- A6620: Expenses: (New Expense Item) 52
- A7510: Expenses: (New Expense Item) 23
- A7520: Expenses: (New Expense Item) 52
- A7530: Expenses: (New Expense Item) 75
- A7570: Expenses: (New Expense Item) 15
- A7580: Expenses: (New Expense Item) 35
- A7590: Expenses: (New Expense Item) 50
- A7470: Expenses: (New Expense Item) 9
- A7480: Expenses: (New Expense Item) 17
- A7490: Expenses: (New Expense Item) 119
- A7500: Expenses: (New Expense Item) 26
- A6430: Expenses: (New Expense Item) 10
- A6440: Expenses: (New Expense Item) 20
- A6450: Expenses: (New Expense Item) 140
- A6460: Expenses: (New Expense Item) 30

| ID | WBS | Activity | Type | Duration | Start | Finish | Predecessors | Total float | Free float | Cost |
| --- | --- | --- | --- | --- | --- | --- | --- | --- | --- | --- |
|  | 29 | **Utilities&any connection between buildings** |  |  | 2012-10-19 | 2013-03-10 |  |  |  |  |
| A7540 |  | Place order for bulk material | milestone | 0d | 2012-10-19 | 2012-10-19 | A1060 FS+60d | 113d | 0d | 8 |
| A7550 |  | material received@construction site | milestone | 0d | 2013-02-08 | 2013-02-08 | A7540 FS+112d | 113d | 0d | 17 |
| A7560 |  | All material received&p.o closed | milestone | 0d | 2013-03-10 | 2013-03-10 | A7550 FS+30d | 113d |  | 25 |
|  | 17 | **Material&equipment for Secure Communication Building** |  |  | 2012-10-19 | 2013-04-03 |  |  |  |  |
| A6470 |  | Issue mr for approval | milestone | 0d | 2012-10-19 | 2012-10-19 | A1060 FS+60d | 89d | 0d | 8 |
| A6480 |  | Issue Po | milestone | 0d | 2012-11-16 | 2012-11-16 | A6470 FS+28d | 89d | 0d | 15 |
| A6490 |  | Material received and inspected@ site | milestone | 0d | 2013-03-06 | 2013-03-06 | A6480 FS+110d | 89d | 0d | 105 |
| A6500 |  | All spare parts rec'd | milestone | 0d | 2013-04-03 | 2013-04-03 | A6490 FS+28d | 89d |  | 22 |
|  | 18 | **Material&equipment for Central Control Room Building** |  |  | 2012-09-19 | 2013-01-14 |  |  |  |  |
| A6510 |  | Issue mr for approval | milestone | 0d | 2012-09-19 | 2012-09-19 | A1060 FS+30d | 168d | 0d | 24 |
| A6520 |  | Issue Po | milestone | 0d | 2012-10-17 | 2012-10-17 | A6510 FS+28d | 168d | 0d | 48 |
| A6530 |  | Material received and inspected@ site | milestone | 0d | 2012-12-17 | 2012-12-17 | A6520 FS+61d | 168d | 0d | 336 |
| A6540 |  | All spare parts rec'd | milestone | 0d | 2013-01-14 | 2013-01-14 | A6530 FS+28d | 168d |  | 72 |
|  | 19 | **Material&equipment for Laboratory** |  |  | 2012-09-19 | 2013-01-14 |  |  |  |  |
| A6550 |  | Issue mr for approval | milestone | 0d | 2012-09-19 | 2012-09-19 | A1060 FS+30d | 168d | 0d | 17 |
| A6560 |  | Issue Po | milestone | 0d | 2012-10-17 | 2012-10-17 | A6550 FS+28d | 168d | 0d | 35 |
| A6570 |  | Material received and inspected@ site | milestone | 0d | 2012-12-17 | 2012-12-17 | A6560 FS+61d | 168d | 0d | 245 |
| A6580 |  | All spare parts rec'd | milestone | 0d | 2013-01-14 | 2013-01-14 | A6570 FS+28d | 168d |  | 53 |
|  | 11 | **Material&equipment for Main Security guard house & Security system** |  |  | 2012-10-19 | 2013-04-05 |  |  |  |  |
| A6230 |  | Issue mr for approval | milestone | 0d | 2012-10-19 | 2012-10-19 | A1060 FS+60d | 87d | 0d | 8 |
| A6240 |  | Issue Po | milestone | 0d | 2012-11-16 | 2012-11-16 | A6230 FS+28d | 87d | 0d | 15 |
| A6250 |  | Material received and inspected@ site | milestone | 0d | 2013-03-08 | 2013-03-08 | A6240 FS+112d | 87d | 0d | 105 |
| A6260 |  | All spare parts rec'd | milestone | 0d | 2013-04-05 | 2013-04-05 | A6250 FS+28d | 87d |  | 22 |

Notes:
- A7540: Expenses: (New Expense Item) 8
- A7550: Expenses: (New Expense Item) 17
- A7560: Expenses: (New Expense Item) 25
- A6470: Expenses: (New Expense Item) 8
- A6480: Expenses: (New Expense Item) 15
- A6490: Expenses: (New Expense Item) 105
- A6500: Expenses: (New Expense Item) 22
- A6510: Expenses: (New Expense Item) 24
- A6520: Expenses: (New Expense Item) 48
- A6530: Expenses: (New Expense Item) 336
- A6540: Expenses: (New Expense Item) 72
- A6550: Expenses: (New Expense Item) 17
- A6560: Expenses: (New Expense Item) 35
- A6570: Expenses: (New Expense Item) 245
- A6580: Expenses: (New Expense Item) 53
- A6230: Expenses: (New Expense Item) 8
- A6240: Expenses: (New Expense Item) 15
- A6250: Expenses: (New Expense Item) 105
- A6260: Expenses: (New Expense Item) 22

| ID | WBS | Activity | Type | Duration | Start | Finish | Predecessors | Total float | Free float | Cost |
| --- | --- | --- | --- | --- | --- | --- | --- | --- | --- | --- |
|  | 10 | **Material&equipment for Main gate House** |  |  | 2012-10-19 | 2013-01-25 |  |  |  |  |
| A6190 |  | Issue mr for approval | milestone | 0d | 2012-10-19 | 2012-10-19 | A1060 FS+60d | 157d | 0d | 8 |
| A6200 |  | Issue Po | milestone | 0d | 2012-11-16 | 2012-11-16 | A6190 FS+28d | 157d | 0d | 15 |
| A6210 |  | Material received and inspected@ site | milestone | 0d | 2012-12-28 | 2012-12-28 | A6200 FS+42d | 157d | 0d | 105 |
| A6220 |  | All spare parts rec'd | milestone | 0d | 2013-01-25 | 2013-01-25 | A6210 FS+28d | 157d |  | 22 |
|  | 13 | **Material&equipment for Change House** |  |  | 2012-10-19 | 2013-02-12 |  |  |  |  |
| A6310 |  | Issue mr for approval | milestone | 0d | 2012-10-19 | 2012-10-19 | A1060 FS+60d | 139d | 0d | 8 |
| A6320 |  | Issue Po | milestone | 0d | 2012-11-16 | 2012-11-16 | A6310 FS+28d | 139d | 0d | 15 |
| A6330 |  | Material received and inspected@ site | milestone | 0d | 2013-01-15 | 2013-01-15 | A6320 FS+60d | 139d | 0d | 105 |
| A6340 |  | All spare parts rec'd | milestone | 0d | 2013-02-12 | 2013-02-12 | A6330 FS+28d | 139d |  | 22 |
|  | 21 | **Material&equipment for electrical equipment** |  |  | 2012-10-19 | 2013-02-07 |  |  |  |  |
| A6830 |  | Issue mr for approval | milestone | 0d | 2012-10-19 | 2012-10-19 | A1060 FS+60d | 144d | 0d | 13 |
| A6840 |  | Issue Po | milestone | 0d | 2012-11-16 | 2012-11-16 | A6830 FS+28d | 144d | 0d | 25 |
| A6850 |  | Material received and inspected@ site | milestone | 0d | 2013-01-10 | 2013-01-10 | A6840 FS+55d | 144d | 0d | 175 |
| A6860 |  | All spare parts rec'd | milestone | 0d | 2013-02-07 | 2013-02-07 | A6850 FS+28d | 144d |  | 37 |
|  | 9 | **Material&equipment for Fire fighting station** |  |  | 2012-10-19 | 2012-12-24 |  |  |  |  |
| A6150 |  | Issue mr for approval | milestone | 0d | 2012-10-19 | 2012-10-19 | A1060 FS+60d | 189d | 0d | 15 |
| A6160 |  | Issue Po | milestone | 0d | 2012-11-16 | 2012-11-16 | A6150 FS+28d | 189d | 0d | 30 |
| A6170 |  | Material received and inspected@ site | milestone | 0d | 2012-11-26 | 2012-11-26 | A6160 FS+10d | 189d | 0d | 210 |
| A6180 |  | All spare parts rec'd | milestone | 0d | 2012-12-24 | 2012-12-24 | A6170 FS+28d | 189d |  | 45 |
|  | 7 | **Material&equipment for medical centre** |  |  | 2012-10-19 | 2012-12-24 |  |  |  |  |
| A6790 |  | Issue mr for approval | milestone | 0d | 2012-10-19 | 2012-10-19 | A1060 FS+60d | 189d | 0d | 8 |
| A6800 |  | Issue Po | milestone | 0d | 2012-11-16 | 2012-11-16 | A6790 FS+28d | 189d | 0d | 15 |
| A6810 |  | Material received and inspected@ site | milestone | 0d | 2012-11-26 | 2012-11-26 | A6800 FS+10d | 189d | 0d | 105 |
| A6820 |  | All spare parts rec'd | milestone | 0d | 2012-12-24 | 2012-12-24 | A6810 FS+28d | 189d |  | 22 |

Notes:
- A6190: Expenses: (New Expense Item) 8
- A6200: Expenses: (New Expense Item) 15
- A6210: Expenses: (New Expense Item) 105
- A6220: Expenses: (New Expense Item) 22
- A6310: Expenses: (New Expense Item) 8
- A6320: Expenses: (New Expense Item) 15
- A6330: Expenses: (New Expense Item) 105
- A6340: Expenses: (New Expense Item) 22
- A6830: Expenses: (New Expense Item) 13
- A6840: Expenses: (New Expense Item) 25
- A6850: Expenses: (New Expense Item) 175
- A6860: Expenses: (New Expense Item) 37
- A6150: Expenses: (New Expense Item) 15
- A6160: Expenses: (New Expense Item) 30
- A6170: Expenses: (New Expense Item) 210
- A6180: Expenses: (New Expense Item) 45
- A6790: Expenses: (New Expense Item) 8
- A6800: Expenses: (New Expense Item) 15
- A6810: Expenses: (New Expense Item) 105
- A6820: Expenses: (New Expense Item) 22

| ID | WBS | Activity | Type | Duration | Start | Finish | Predecessors | Total float | Free float | Cost |
| --- | --- | --- | --- | --- | --- | --- | --- | --- | --- | --- |
|  | 8 | **Material&equipment for Prayer Bldg.** |  |  | 2012-10-19 | 2013-04-03 |  |  |  |  |
| A6110 |  | Issue mr for approval | milestone | 0d | 2012-10-19 | 2012-10-19 | A1060 FS+60d | 89d | 0d | 10 |
| A6120 |  | Issue Po | milestone | 0d | 2012-11-16 | 2012-11-16 | A6110 FS+28d | 89d | 0d | 20 |
| A6130 |  | Material received and inspected@ site | milestone | 0d | 2013-03-06 | 2013-03-06 | A6120 FS+110d | 89d | 0d | 40 |
| A6140 |  | All spare parts rec'd | milestone | 0d | 2013-04-03 | 2013-04-03 | A6130 FS+28d | 89d |  | 30 |
|  | 3 | **Material&equipment for safe haven** |  |  | 2012-10-19 | 2013-04-20 |  |  |  |  |
| A6630 |  | Issue mr for approval | milestone | 0d | 2012-10-19 | 2012-10-19 | A1060 FS+60d | 72d | 0d | 18 |
| A6640 |  | Issue Po | milestone | 0d | 2012-11-16 | 2012-11-16 | A6630 FS+28d | 72d | 0d | 35 |
| A6650 |  | Material received and inspected@ site | milestone | 0d | 2013-03-16 | 2013-03-16 | A6640 FS+120d | 72d | 0d | 245 |
| A6660 |  | All spare parts rec'd | milestone | 0d | 2013-04-20 | 2013-04-20 | A6650 FS+35d | 72d | 0d | 52 |
|  | 5 | **Material&equipment for Chemical warehouse** |  |  | 2012-10-19 | 2013-04-03 |  |  |  |  |
| A6670 |  | Issue mr for approval | milestone | 0d | 2012-10-19 | 2012-10-19 | A1060 FS+60d | 89d | 0d | 5 |
| A6680 |  | Issue Po | milestone | 0d | 2012-11-16 | 2012-11-16 | A6670 FS+28d | 89d | 0d | 10 |
| A6690 |  | Material received and inspected@ site | milestone | 0d | 2013-03-06 | 2013-03-06 | A6680 FS+110d | 89d | 0d | 70 |
| A6700 |  | All spare parts rec'd | milestone | 0d | 2013-04-03 | 2013-04-03 | A6690 FS+28d | 89d |  | 15 |
|  | 4 | **Material&equipment for oil police building** |  |  | 2012-10-19 | 2013-03-14 |  |  |  |  |
| A6710 |  | Issue mr for approval | milestone | 0d | 2012-10-19 | 2012-10-19 | A1060 FS+60d | 109d | 0d | 10 |
| A6720 |  | Issue Po | milestone | 0d | 2012-11-16 | 2012-11-16 | A6710 FS+28d | 109d | 0d | 20 |
| A6730 |  | Material received and inspected@ site | milestone | 0d | 2013-02-14 | 2013-02-14 | A6720 FS+90d | 109d | 0d | 140 |
| A6740 |  | All spare parts rec'd | milestone | 0d | 2013-03-14 | 2013-03-14 | A6730 FS+28d | 109d |  | 30 |
|  | 6 | **Material&equipment for warehouse for storage of electrical instrumentation** |  |  | 2012-10-19 | 2013-04-05 |  |  |  |  |
| A6870 |  | Issue mr for approval | milestone | 0d | 2012-10-19 | 2012-10-19 | A1060 FS+60d | 87d | 0d | 5 |
| A6880 |  | Issue Po | milestone | 0d | 2012-11-16 | 2012-11-16 | A6870 FS+28d | 87d | 0d | 10 |
| A6890 |  | Material received and inspected@ site | milestone | 0d | 2013-03-08 | 2013-03-08 | A6880 FS+112d | 87d | 0d | 70 |
| A6900 |  | All spare parts rec'd | milestone | 0d | 2013-04-05 | 2013-04-05 | A6890 FS+28d | 87d |  | 15 |

Notes:
- A6110: Expenses: (New Expense Item) 10
- A6120: Expenses: (New Expense Item) 20
- A6130: Expenses: (New Expense Item) 40
- A6140: Expenses: (New Expense Item) 30
- A6630: Expenses: (New Expense Item) 18
- A6640: Expenses: (New Expense Item) 35
- A6650: Expenses: (New Expense Item) 245
- A6660: Expenses: (New Expense Item) 52
- A6670: Expenses: (New Expense Item) 5
- A6680: Expenses: (New Expense Item) 10
- A6690: Expenses: (New Expense Item) 70
- A6700: Expenses: (New Expense Item) 15
- A6710: Expenses: (New Expense Item) 10
- A6720: Expenses: (New Expense Item) 20
- A6730: Expenses: (New Expense Item) 140
- A6740: Expenses: (New Expense Item) 30
- A6870: Expenses: (New Expense Item) 5
- A6880: Expenses: (New Expense Item) 10
- A6890: Expenses: (New Expense Item) 70
- A6900: Expenses: (New Expense Item) 15

| ID | WBS | Activity | Type | Duration | Start | Finish | Predecessors | Total float | Free float | Resources | Cost | concrete work |
| --- | --- | --- | --- | --- | --- | --- | --- | --- | --- | --- | --- | --- |
|  | 22 | **Material&equipment for security check point booths** |  |  | 2012-10-19 | 2013-04-05 |  |  |  |  |  |  |
| A6910 |  | Issue mr for approval | milestone | 0d | 2012-10-19 | 2012-10-19 | A1060 FS+60d | 87d | 0d |  | 3 |  |
| A6920 |  | Issue Po | milestone | 0d | 2012-11-16 | 2012-11-16 | A6910 FS+28d | 87d | 0d |  | 5 |  |
| A6930 |  | Material received and inspected@ site | milestone | 0d | 2013-03-08 | 2013-03-08 | A6920 FS+112d | 87d | 0d |  | 35 |  |
| A6940 |  | All spare parts rec'd | milestone | 0d | 2013-04-05 | 2013-04-05 | A6930 FS+28d | 87d |  |  | 7 |  |
|  | 23 | **Material&equipment for helipad** |  |  | 2012-10-19 | 2013-04-05 |  |  |  |  |  |  |
| A6950 |  | Issue mr for approval | milestone | 0d | 2012-10-19 | 2012-10-19 | A1060 FS+60d | 87d | 0d |  | 5 |  |
| A6960 |  | Issue Po | milestone | 0d | 2012-11-16 | 2012-11-16 | A6950 FS+28d | 87d | 0d |  | 10 |  |
| A6970 |  | Material received and inspected@ site | milestone | 0d | 2013-03-08 | 2013-03-08 | A6960 FS+112d | 87d | 0d |  | 70 |  |
| A6980 |  | All spare parts rec'd | milestone | 0d | 2013-04-05 | 2013-04-05 | A6970 FS+28d | 87d |  |  | 15 |  |
|  | 24 | **Material&equipment for roads&covered parking** |  |  | 2012-10-19 | 2013-04-05 |  |  |  |  |  |  |
| A6990 |  | Issue mr for approval | milestone | 0d | 2012-10-19 | 2012-10-19 | A1060 FS+60d | 87d | 0d |  | 10 |  |
| A7000 |  | Issue Po | milestone | 0d | 2012-11-16 | 2012-11-16 | A6990 FS+28d | 87d | 0d |  | 20 |  |
| A7010 |  | Material received and inspected@ site | milestone | 0d | 2013-03-08 | 2013-03-08 | A7000 FS+112d | 87d | 0d |  | 140 |  |
| A7020 |  | All spare parts rec'd | milestone | 0d | 2013-04-05 | 2013-04-05 | A7010 FS+28d | 87d |  |  | 30 |  |
|  | 25 | **Material&equipment for evaporation pond** |  |  | 2012-05-27 | 2012-10-16 |  |  |  |  |  |  |
| A7400 |  | Place order for bulk material | milestone | 0d | 2012-05-27 | 2012-05-27 |  | 258d | 0d |  | 7 |  |
| A7410 |  | material received@construction site | milestone | 0d | 2012-09-16 | 2012-09-16 | A7400 FS+112d | 258d | 0d |  | 18 |  |
| A7420 |  | All material received&p.o closed | milestone | 0d | 2012-10-16 | 2012-10-16 | A7410 FS+30d | 258d |  |  | 25 |  |
|  | CONSTRUCTION | **CONSTRUCTION** |  |  | 2012-06-16 | 2013-05-15 |  |  |  |  |  |  |
|  | 12 | **MAIN GATE HOUSE** |  |  | 2012-11-28 | 2013-04-09 |  |  |  |  |  |  |
|  | 1 | **CIVIL SCOPE** |  |  | 2012-11-28 | 2013-04-09 |  |  |  |  |  |  |
| A1180 |  | Excavation |  | 7d | 2012-11-28 | 2012-12-04 | A1060 FS+100d | 82d | 0d |  |  |  |
| A5800 |  | cash | level of effort | 133d | 2012-11-28 | 2013-04-09 | A1180 SS | 82d | 0d |  | 52 |  |
| A1190 |  | P.c&R.c footing |  | 14d | 2012-12-05 | 2012-12-18 | A1180 | 82d | 0d | CARPENTER [30 h]; STEEL LABOUR [30 h] |  | conc |
| A1200 |  | R.c columns |  | 7d | 2012-12-19 | 2012-12-25 | A1190 | 82d | 0d | CARPENTER [20 h]; STEEL LABOUR [20 h] |  | conc |
| A1210 |  | Ground floor slab |  | 14d | 2012-12-26 | 2013-01-08 | A1200 | 82d | 0d | CARPENTER [100 h]; STEEL LABOUR [100 h] |  | conc |

Notes:
- A6910: Expenses: (New Expense Item) 3
- A6920: Expenses: (New Expense Item) 5
- A6930: Expenses: (New Expense Item) 35
- A6940: Expenses: (New Expense Item) 7
- A6950: Expenses: (New Expense Item) 5
- A6960: Expenses: (New Expense Item) 10
- A6970: Expenses: (New Expense Item) 70
- A6980: Expenses: (New Expense Item) 15
- A6990: Expenses: (New Expense Item) 10
- A7000: Expenses: (New Expense Item) 20
- A7010: Expenses: (New Expense Item) 140
- A7020: Expenses: (New Expense Item) 30
- A7400: Expenses: (New Expense Item) 7
- A7410: Expenses: (New Expense Item) 18
- A7420: Expenses: (New Expense Item) 25
- A5800: Expenses: (New Expense Item) 52

| ID | WBS | Activity | Type | Duration | Start | Finish | Predecessors | Total float | Free float | Resources | Cost | concrete work |
| --- | --- | --- | --- | --- | --- | --- | --- | --- | --- | --- | --- | --- |
|  | 2 | **ARCH SCOPE** |  |  | 2013-01-23 | 2013-04-06 |  |  |  |  |  |  |
| A1220 |  | masonry works |  | 14d | 2013-01-23 | 2013-02-05 | A1210 FS+14d | 82d | 0d | Brickwork Labor [90 h] |  |  |
| A2120 |  | Plaster works |  | 15d | 2013-02-06 | 2013-02-20 | A1220 | 82d | 0d | finishes worker [75 h] |  |  |
| A2130 |  | Flooring works |  | 15d | 2013-02-21 | 2013-03-07 | A2120 | 82d | 0d | finishes worker [75 h] |  |  |
| A2150 |  | Doors&windows erection |  | 5d | 2013-03-08 | 2013-03-12 | A2130 | 82d | 0d | finishes worker [25 h] |  |  |
| A2160 |  | False ceiling |  | 15d | 2013-03-13 | 2013-03-27 | A2150 | 82d | 0d | finishes worker [75 h] |  |  |
| A2140 |  | Painting works |  | 10d | 2013-03-28 | 2013-04-06 | A2160 | 82d | 0d | finishes worker [50 h] |  |  |
|  | 3 | **ELECTRICAL SCOPE** |  |  | 2013-02-14 | 2013-04-04 |  |  |  |  |  |  |
| A2960 |  | Conduits&outlets |  | 7d | 2013-02-14 | 2013-02-20 | A2120 FF, A2120 SS | 130d |  |  |  |  |
| A2980 |  | Cable trays |  | 6d | 2013-03-08 | 2013-03-13 | A2130 | 109d |  |  |  |  |
| A3000 |  | Fire alarm system |  | 15d | 2013-03-13 | 2013-03-27 | A2160 FF | 95d |  |  |  |  |
| A2970 |  | Lighting & power panels |  | 8d | 2013-03-28 | 2013-04-04 | A2160 | 87d | 0d |  |  |  |
| A2990 |  | Telecommunications system & outlets |  | 8d | 2013-03-28 | 2013-04-04 | A2970 FF | 87d |  |  |  |  |
|  | 4 | **MECHANICAL SCOPE** |  |  | 2013-02-06 | 2013-04-09 |  |  |  |  |  |  |
|  | 2 | **PLUMBING WORKS** |  |  | 2013-02-06 | 2013-04-09 |  |  |  |  |  |  |
| A2940 |  | Plumbing works(first fix) |  | 3d | 2013-02-06 | 2013-02-08 | A1220 | 142d |  | MEP WORKER [7 h] |  |  |
| A2950 |  | Plumbing works(second fix) |  | 3d | 2013-04-07 | 2013-04-09 | A2140, A5800 FF | 82d |  |  |  |  |
|  | 1 | **HVAC WORKS** |  |  | 2013-03-08 | 2013-04-07 |  |  |  |  |  |  |
| A5400 |  | Duct work |  | 1d | 2013-03-08 | 2013-03-08 | A2130 | 114d |  |  |  |  |
| A5330 |  | Split units |  | 1d | 2013-04-07 | 2013-04-07 | A2140 | 84d |  |  |  |  |
|  | 2 | **SECONDARY GATE HOUSE** |  |  | 2013-02-06 | 2013-05-15 |  |  |  |  |  |  |
|  | 1 | **CIVIL SCOPE** |  |  | 2013-02-06 | 2013-05-15 |  |  |  |  |  |  |
| A1300 |  | Excavation |  | 2d | 2013-02-06 | 2013-02-07 | A1060 FS+170d | 69d | 0d |  |  |  |
| A5820 |  | cash | level of effort | 99d | 2013-02-06 | 2013-05-15 | A1300 SS | 46d | 0d |  | 52 |  |
| A1310 |  | P.c&R.c footing |  | 5d | 2013-02-08 | 2013-02-12 | A1300 | 69d | 0d | CARPENTER [10 h]; STEEL LABOUR [10 h] |  | conc |
| A1320 |  | R.c columns |  | 5d | 2013-02-13 | 2013-02-17 | A1310 | 69d | 0d | CARPENTER [30 h]; STEEL LABOUR [30 h] |  | conc |
| A1330 |  | Ground floor slab |  | 10d | 2013-02-18 | 2013-02-27 | A1320 | 69d | 23d | CARPENTER [30 h]; STEEL LABOUR [30 h] |  | conc |

Notes:
- A5820: Expenses: (New Expense Item) 52

| ID | WBS | Activity | Type | Duration | Start | Finish | Predecessors | Total float | Free float | Resources | Cost | concrete work |
| --- | --- | --- | --- | --- | --- | --- | --- | --- | --- | --- | --- | --- |
|  | 2 | **ARCH SCOPE** |  |  | 2013-04-02 | 2013-04-16 |  |  |  |  |  |  |
| A1340 |  | masonry works |  | 5d | 2013-04-02 | 2013-04-06 | A1330 FS+10d, A7900 FS+10d | 46d | 0d | Brickwork Labor [27 h] |  |  |
| A2170 |  | Plaster works |  | 1d | 2013-04-09 | 2013-04-09 | A1340, A3830 | 46d | 0d | finishes worker [5 h] |  |  |
| A2180 |  | Flooring works |  | 1d | 2013-04-10 | 2013-04-10 | A2170 | 46d | 0d | finishes worker [5 h] |  |  |
| A2190 |  | Doors&windows erection |  | 1d | 2013-04-11 | 2013-04-11 | A2180 | 49d | 3d | finishes worker [5 h] |  |  |
| A2200 |  | False ceiling |  | 1d | 2013-04-15 | 2013-04-15 | A2190, A3110 | 46d | 0d | finishes worker [5 h] |  |  |
| A2210 |  | Painting works |  | 1d | 2013-04-16 | 2013-04-16 | A2200 | 46d | 0d | finishes worker [5 h] |  |  |
|  | 3 | **ELECTRICAL SCOPE** |  |  | 2013-04-07 | 2013-05-15 |  |  |  |  |  |  |
| A3160 |  | Grounding&bonding |  | 2d | 2013-04-07 | 2013-04-08 | A3830 SS | 81d | 8d |  |  |  |
| A3100 |  | Conduits&outlets |  | 14d | 2013-04-09 | 2013-04-22 | A2170 SS, A2170 FF | 69d |  |  |  |  |
| A3110 |  | Cable trays |  | 4d | 2013-04-11 | 2013-04-14 | A2180 | 46d | 0d |  |  |  |
| A3130 |  | Fire alarm system |  | 10d | 2013-04-16 | 2013-04-25 | A2200 | 66d |  |  |  |  |
| A3140 |  | Wires&cables |  | 30d | 2013-04-16 | 2013-05-15 | A2210 SS, A5820 FF | 46d |  |  |  |  |
| A3150 |  | Lighting & power panels |  | 5d | 2013-04-16 | 2013-04-20 | A2200 | 71d | 0d |  |  |  |
| A3740 |  | Equipment installation |  | 2d | 2013-04-17 | 2013-04-18 | A3160, A2210 | 73d |  |  |  |  |
| A3120 |  | Telecommunications system & outlets |  | 3d | 2013-04-18 | 2013-04-20 | A3150 FF | 71d |  |  |  |  |
|  | 4 | **MECHANICAL SCOPE** |  |  | 2013-04-07 | 2013-04-18 |  |  |  |  |  |  |
|  | 2 | **PLUMBING WORKS** |  |  | 2013-04-07 | 2013-04-18 |  |  |  |  |  |  |
| A3830 |  | Plumbing works(first fix) |  | 2d | 2013-04-07 | 2013-04-08 | A1340 | 46d | 0d | MEP WORKER [4 h] |  |  |
| A3840 |  | Plumbing works(second fix) |  | 2d | 2013-04-17 | 2013-04-18 | A2210 | 73d |  |  |  |  |
|  | 1 | **HVAC WORKS** |  |  | 2013-04-17 | 2013-04-18 |  |  |  |  |  |  |
| A5430 |  | Split units |  | 2d | 2013-04-17 | 2013-04-18 | A2210 | 73d |  |  |  |  |
|  | 13 | **MAIN SECURITY GUARD HOUSE** |  |  | 2012-10-09 | 2013-04-17 |  |  |  |  |  |  |
|  | 1 | **CIVIL SCOPE** |  |  | 2012-10-09 | 2013-04-17 |  |  |  |  |  |  |
| A1240 |  | Excavation |  | 7d | 2012-10-09 | 2012-10-15 | A1060 FS+50d | 74d | 0d |  |  |  |
| A5810 |  | cash | level of effort | 191d | 2012-10-09 | 2013-04-17 | A1240 SS | 74d | 0d |  | 52 |  |
| A1250 |  | P.c&R.c footing |  | 14d | 2012-10-16 | 2012-10-29 | A1240 | 74d | 0d | CARPENTER [40 h]; STEEL LABOUR [40 h] |  | conc |
| A1260 |  | R.c columns |  | 10d | 2012-10-30 | 2012-11-08 | A1250 | 74d | 0d | CARPENTER [30 h]; STEEL LABOUR [30 h] |  | conc |
| A1270 |  | Ground floor slab |  | 14d | 2012-11-09 | 2012-11-22 | A1260 | 74d | 0d | CARPENTER [200 h]; STEEL LABOUR [112 h] |  | conc |

Notes:
- A5810: Expenses: (New Expense Item) 52

| ID | WBS | Activity | Duration | Start | Finish | Predecessors | Total float | Free float | Resources |
| --- | --- | --- | --- | --- | --- | --- | --- | --- | --- |
|  | 2 | **ARCH SCOPE** |  | 2012-12-03 | 2013-03-28 |  |  |  |  |
| A1280 |  | masonry works | 20d | 2012-12-03 | 2012-12-22 | A1270 FS+10d | 74d | 0d | Brickwork Labor [160 h] |
| A2220 |  | Plaster works | 20d | 2012-12-29 | 2013-01-17 | A1280, A3010 | 74d | 0d | finishes worker [100 h] |
| A2230 |  | Flooring works | 15d | 2013-01-18 | 2013-02-01 | A2220 | 74d | 0d | finishes worker [75 h] |
| A2240 |  | Doors&windows erection | 7d | 2013-02-02 | 2013-02-08 | A2230 | 97d | 23d | finishes worker [35 h] |
| A2250 |  | False ceiling | 15d | 2013-03-04 | 2013-03-18 | A2240, A3040 | 74d | 0d | finishes worker [75 h] |
| A2260 |  | Painting works | 10d | 2013-03-19 | 2013-03-28 | A2250 | 74d | 0d | finishes worker [50 h] |
|  | 3 | **ELECTRICAL SCOPE** |  | 2012-12-23 | 2013-04-17 |  |  |  |  |
| A3080 |  | Grounding&bonding | 5d | 2012-12-23 | 2012-12-27 | A3010 SS | 178d | 91d |  |
| A3030 |  | Conduits&outlets | 7d | 2013-01-11 | 2013-01-17 | A2220 SS, A2220 FF | 164d |  |  |
| A3040 |  | Cable trays | 30d | 2013-02-02 | 2013-03-03 | A2230 | 74d | 0d |  |
| A3050 |  | Fire alarm system | 15d | 2013-03-19 | 2013-04-02 | A2250 | 89d |  |  |
| A3060 |  | Telecommunications system & outlets | 8d | 2013-03-19 | 2013-03-26 | A3070 FF | 96d |  |  |
| A3070 |  | Lighting & power panels | 8d | 2013-03-19 | 2013-03-26 | A2250 | 96d | 0d |  |
| A3090 |  | Wires&cables | 30d | 2013-03-19 | 2013-04-17 | A2260 SS, A5810 FF | 74d |  |  |
| A3730 |  | Equipment installation | 7d | 2013-03-29 | 2013-04-04 | A3080, A2260 | 87d |  |  |
|  | 4 | **MECHANICAL SCOPE** |  | 2012-12-23 | 2013-04-07 |  |  |  |  |
|  | 2 | **PLUMBING WORKS** |  | 2012-12-23 | 2013-04-03 |  |  |  |  |
| A3010 |  | Plumbing works(first fix) | 6d | 2012-12-23 | 2012-12-28 | A1280 | 74d | 0d | MEP WORKER [36 h] |
| A3020 |  | Plumbing works(second fix) | 6d | 2013-03-29 | 2013-04-03 | A2260 | 88d |  |  |
|  | 1 | **HVAC WORKS** |  | 2013-02-02 | 2013-04-07 |  |  |  |  |
| A5350 |  | Duct work | 2d | 2013-02-02 | 2013-02-03 | A2230 | 147d |  |  |
| A5380 |  | VRF units | 10d | 2013-03-29 | 2013-04-07 | A2260 | 84d |  |  |
|  | 18 | **Helipad** |  | 2012-11-28 | 2012-12-23 |  |  |  |  |
| A7760 |  | Excavation | 7d | 2012-11-28 | 2012-12-04 | A1060 FS+100d | 189d | 0d |  |
| A7770 |  | Backfilling&compacting | 7d | 2012-12-05 | 2012-12-11 | A7760 | 189d | 0d |  |
| A7780 |  | Polythreen sheet insulation | 2d | 2012-12-12 | 2012-12-13 | A7770 | 189d | 0d |  |
| A7790 |  | Slab on grade | 10d | 2012-12-14 | 2012-12-23 | A7780 | 189d |  |  |

| ID | WBS | Activity | Type | Duration | Start | Finish | Predecessors | Total float | Free float | Resources | Cost | concrete work |
| --- | --- | --- | --- | --- | --- | --- | --- | --- | --- | --- | --- | --- |
|  | 17 | **SECONDARY GATE HOUSE-2** |  |  | 2013-01-27 | 2013-04-12 |  |  |  |  |  |  |
|  | 1 | **CIVIL SCOPE** |  |  | 2013-01-27 | 2013-04-12 |  |  |  |  |  |  |
| A7180 |  | Excavation |  | 2d | 2013-01-27 | 2013-01-28 | A1060 FS+160d | 79d | 0d |  |  |  |
| A7390 |  | cash | level of effort | 76d | 2013-01-27 | 2013-04-12 | A7180 SS | 79d | 0d |  | 52 |  |
| A7190 |  | P.c&R.c footing |  | 5d | 2013-01-29 | 2013-02-02 | A7180 | 79d | 0d | CARPENTER [10 h]; STEEL LABOUR [10 h] |  | conc |
| A7200 |  | R.c columns |  | 5d | 2013-02-03 | 2013-02-07 | A7190 | 79d | 0d | CARPENTER [30 h]; STEEL LABOUR [30 h] |  | conc |
| A7210 |  | Ground floor slab |  | 10d | 2013-02-08 | 2013-02-17 | A7200 | 79d | 0d | CARPENTER [30 h]; STEEL LABOUR [30 h] |  | conc |
|  | 2 | **ARCH SCOPE** |  |  | 2013-02-28 | 2013-03-14 |  |  |  |  |  |  |
| A7220 |  | masonry works |  | 5d | 2013-02-28 | 2013-03-04 | A7210 FS+10d | 79d | 0d | Brickwork Labor [27 h] |  |  |
| A7230 |  | Plaster works |  | 1d | 2013-03-07 | 2013-03-07 | A7220, A7360 | 79d | 0d | finishes worker [5 h] |  |  |
| A7240 |  | Flooring works |  | 1d | 2013-03-08 | 2013-03-08 | A7230 | 79d | 0d | finishes worker [5 h] |  |  |
| A7260 |  | Doors&windows erection |  | 1d | 2013-03-09 | 2013-03-09 | A7240 | 82d | 3d | finishes worker [5 h] |  |  |
| A7270 |  | False ceiling |  | 1d | 2013-03-13 | 2013-03-13 | A7260, A7300 | 79d | 0d | finishes worker [5 h] |  |  |
| A7250 |  | Painting works |  | 1d | 2013-03-14 | 2013-03-14 | A7270 | 79d | 0d | finishes worker [5 h] |  |  |
|  | 3 | **ELECTRICAL SCOPE** |  |  | 2013-03-05 | 2013-04-12 |  |  |  |  |  |  |
| A7330 |  | Grounding&bonding |  | 2d | 2013-03-05 | 2013-03-06 | A7360 SS | 114d | 8d |  |  |  |
| A7280 |  | Conduits&outlets |  | 14d | 2013-03-07 | 2013-03-20 | A7230 SS, A7230 FF | 102d |  |  |  |  |
| A7300 |  | Cable trays |  | 4d | 2013-03-09 | 2013-03-12 | A7240 | 79d | 0d |  |  |  |
| A7290 |  | Lighting & power panels |  | 5d | 2013-03-14 | 2013-03-18 | A7270 | 104d | 0d |  |  |  |
| A7320 |  | Fire alarm system |  | 10d | 2013-03-14 | 2013-03-23 | A7270 | 99d |  |  |  |  |
| A7340 |  | Wires&cables |  | 30d | 2013-03-14 | 2013-04-12 | A7250 SS, A7390 FF | 79d |  |  |  |  |
| A7350 |  | Equipment installation |  | 2d | 2013-03-15 | 2013-03-16 | A7330, A7250 | 106d |  |  |  |  |
| A7310 |  | Telecommunications system & outlets |  | 3d | 2013-03-16 | 2013-03-18 | A7290 FF | 104d |  |  |  |  |
|  | 4 | **MECHANICAL SCOPE** |  |  | 2013-03-05 | 2013-03-16 |  |  |  |  |  |  |
|  | 2 | **PLUMBING WORKS** |  |  | 2013-03-05 | 2013-03-16 |  |  |  |  |  |  |
| A7360 |  | Plumbing works(first fix) |  | 2d | 2013-03-05 | 2013-03-06 | A7220 | 79d | 0d | MEP WORKER |  |  |
| A7370 |  | Plumbing works(second fix) |  | 2d | 2013-03-15 | 2013-03-16 | A7250 | 106d |  |  |  |  |

Notes:
- A7390: Expenses: (New Expense Item) 52

| ID | WBS | Activity | Type | Duration | Start | Finish | Predecessors | Total float | Free float | Resources | Cost | concrete work |
| --- | --- | --- | --- | --- | --- | --- | --- | --- | --- | --- | --- | --- |
|  | 1 | **HVAC WORKS** |  |  | 2013-03-15 | 2013-03-16 |  |  |  |  |  |  |
| A7380 |  | Split units |  | 2d | 2013-03-15 | 2013-03-16 | A7250 | 106d |  |  |  |  |
|  | 19 | **Security Booth - Check Points** |  |  | 2012-09-19 | 2012-11-03 |  |  |  |  |  |  |
| A7800 |  | Excavation |  | 7d | 2012-09-19 | 2012-09-25 | A1060 FS+30d | 84d | 0d |  |  |  |
| A7850 |  | Cash | level of effort | 46d | 2012-09-19 | 2012-11-03 | A7800 SS | 84d | 0d |  | 17 |  |
| A7820 |  | P.c&R.c footing |  | 14d | 2012-09-26 | 2012-10-09 | A7800 | 84d | 0d | CARPENTER [50 h]; STEEL LABOUR [50 h] |  | conc |
| A7830 |  | R.c columns |  | 10d | 2012-10-10 | 2012-10-19 | A7820 | 84d | 0d | CARPENTER [50 h]; STEEL LABOUR [50 h] |  | conc |
| A7840 |  | Ground floor slab |  | 15d | 2012-10-20 | 2012-11-03 | A7830, A7850 FF | 84d | 0d | CARPENTER [50 h]; STEEL LABOUR [50 h] |  | conc |
|  | 20 | **Safe haven** |  |  | 2012-11-28 | 2013-03-22 |  |  |  |  |  |  |
| A7860 |  | Excavation |  | 10d | 2012-11-28 | 2012-12-07 | A1060 FS+100d | 46d | 0d |  |  |  |
| A7870 |  | cash | level of effort | 115d | 2012-11-28 | 2013-03-22 | A7860 SS | 46d | 0d |  | 52 |  |
| A7880 |  | P.c&R.c footing |  | 30d | 2012-12-08 | 2013-01-06 | A7860 | 46d | 0d | CARPENTER [10 h]; STEEL LABOUR [10 h] |  | conc |
| A7890 |  | R.c columns&walls |  | 45d | 2013-01-07 | 2013-02-20 | A7880 | 46d | 0d | CARPENTER [30 h]; STEEL LABOUR [30 h] |  | conc |
| A7900 |  | Ground floor slab |  | 30d | 2013-02-21 | 2013-03-22 | A7890, A7870 FF | 46d | 0d | CARPENTER [30 h]; STEEL LABOUR [30 h] |  | conc |
|  | 21 | **Medical centre** |  |  | 2012-08-20 | 2013-03-09 |  |  |  |  |  |  |
|  | 1 | **CIVIL SCOPE** |  |  | 2012-08-20 | 2013-03-09 |  |  |  |  |  |  |
| A7910 |  | Excavation |  | 7d | 2012-08-20 | 2012-08-26 | A1060 | 113d | 0d |  |  |  |
| A8130 |  | cash | level of effort | 202d | 2012-08-20 | 2013-03-09 | A7910 SS | 113d | 0d |  | 52 |  |
| A7920 |  | P.c&R.c footing |  | 14d | 2012-08-27 | 2012-09-09 | A7910 | 113d | 0d | CARPENTER [50 h]; STEEL LABOUR [50 h] |  | conc |
| A7930 |  | R.c columns |  | 10d | 2012-09-10 | 2012-09-19 | A7920 | 113d | 0d | CARPENTER [50 h]; STEEL LABOUR [50 h] |  | conc |
| A7940 |  | Ground floor slab |  | 20d | 2012-09-20 | 2012-10-09 | A7930 | 113d | 0d | CARPENTER [70 h]; STEEL LABOUR [70 h] |  | conc |
|  | 2 | **ARCH SCOPE** |  |  | 2012-10-24 | 2013-02-04 |  |  |  |  |  |  |
| A7950 |  | masonry works |  | 20d | 2012-10-24 | 2012-11-12 | A7940 FS+14d | 113d | 0d | Brickwork Labor [109 h] |  |  |
| A7960 |  | Plaster works |  | 15d | 2012-12-03 | 2012-12-17 | A7950, A8090 | 113d | 0d | finishes worker [75 h] |  |  |
| A7970 |  | Flooring works |  | 15d | 2012-12-18 | 2013-01-01 | A7960 | 113d | 0d | finishes worker [75 h] |  |  |
| A7990 |  | Doors&windows erection |  | 3d | 2013-01-02 | 2013-01-04 | A7970 | 130d | 17d | finishes worker [15 h] |  |  |
| A8000 |  | False ceiling |  | 7d | 2013-01-22 | 2013-01-28 | A7990, A8030, A8110 | 113d | 0d | finishes worker [35 h] |  |  |
| A7980 |  | Painting works |  | 7d | 2013-01-29 | 2013-02-04 | A8000 | 113d | 0d | finishes worker [35 h] |  |  |

Notes:
- A7850: Expenses: (New Expense Item) 17
- A7870: Expenses: (New Expense Item) 52
- A8130: Expenses: (New Expense Item) 52

| ID | WBS | Activity | Type | Duration | Start | Finish | Predecessors | Total float | Free float | Resources | Cost |
| --- | --- | --- | --- | --- | --- | --- | --- | --- | --- | --- | --- |
|  | 3 | **ELECTRICAL SCOPE** |  |  | 2012-11-13 | 2013-03-09 |  |  |  |  |  |
| A8060 |  | Grounding&bonding |  | 8d | 2012-11-13 | 2012-11-20 | A8090 SS | 215d | 0d |  |  |
| A8080 |  | Equipment installation |  | 7d | 2012-11-21 | 2012-11-27 | A8060 | 215d |  |  |  |
| A8010 |  | Conduits&outlets |  | 30d | 2012-12-03 | 2013-01-01 | A7960 SS, A7960 FF | 180d |  |  |  |
| A8030 |  | Cable trays |  | 20d | 2013-01-02 | 2013-01-21 | A7970 | 113d | 0d |  |  |
| A8020 |  | Lighting & power panels |  | 20d | 2013-01-29 | 2013-02-17 | A8000 | 133d | 0d |  |  |
| A8050 |  | Fire alarm system |  | 35d | 2013-01-29 | 2013-03-04 | A8000 | 118d |  |  |  |
| A8070 |  | Wires&cables |  | 40d | 2013-01-29 | 2013-03-09 | A7980 SS, A8130 FF | 113d |  |  |  |
| A8040 |  | Telecommunications system & outlets |  | 8d | 2013-02-10 | 2013-02-17 | A8020 FF | 133d |  |  |  |
|  | 4 | **MECHANICAL SCOPE** |  |  | 2012-11-13 | 2013-02-24 |  |  |  |  |  |
|  | 2 | **PLUMBING WORKS** |  |  | 2012-11-13 | 2013-02-24 |  |  |  |  |  |
| A8090 |  | Plumbing works(first fix) |  | 20d | 2012-11-13 | 2012-12-02 | A7950 | 113d | 0d | MEP WORKER |  |
| A8100 |  | Plumbing works(second fix) |  | 20d | 2013-02-05 | 2013-02-24 | A7980 | 126d |  |  |  |
|  | 1 | **HVAC WORKS** |  |  | 2012-12-18 | 2012-12-19 |  |  |  |  |  |
| A8110 |  | Duct work |  | 2d | 2012-12-18 | 2012-12-19 | A7960 | 146d | 33d |  |  |
|  | 23 | **Roads &covered parking** |  |  | 2013-01-17 | 2013-04-26 |  |  |  |  |  |
| A8370 |  | Roads &covered parkings |  | 100d | 2013-01-17 | 2013-04-26 | A1060 FS+150d | 65d |  |  | 225 |
|  | 24 | **Evaporation pond** |  |  | 2012-06-16 | 2013-05-11 |  |  |  |  |  |
| A8380 |  | Excavation |  | 45d | 2012-06-16 | 2012-07-30 | A1060 SS+20d | 50d | 0d |  |  |
| A8460 |  | cash | level of effort | 330d | 2012-06-16 | 2013-05-11 | A8380 SS | 50d | 0d |  | 17 |
| A8390 |  | Backfilling from foundation level |  | 30d | 2012-07-31 | 2012-08-29 | A8380 | 50d | 0d |  |  |
| A8400 |  | Plain concrete |  | 40d | 2012-08-30 | 2012-10-08 | A8390 | 50d | 0d |  |  |
| A8410 |  | R.C for foundations&ground beams |  | 80d | 2012-10-09 | 2012-12-27 | A8400 | 50d | 0d |  |  |
| A8420 |  | R.C walls |  | 80d | 2012-12-28 | 2013-03-17 | A8410 | 50d | 0d |  |  |
| A8430 |  | Bituminous insulation |  | 20d | 2013-03-18 | 2013-04-06 | A8420 | 50d | 0d |  |  |
| A8440 |  | Water proof membrane |  | 20d | 2013-04-07 | 2013-04-26 | A8430 | 50d | 0d |  |  |
| A8450 |  | Internal wall painting |  | 15d | 2013-04-27 | 2013-05-11 | A8440, A8460 FF | 50d |  |  |  |

Notes:
- A8370: Expenses: (New Expense Item) 69; (New Expense Item)1 35; (New Expense Item)2 69; (New Expense Item)3 52
- A8460: Expenses: (New Expense Item) 17

| ID | WBS | Activity | Type | Duration | Start | Finish | Predecessors | Total float | Free float | Resources | Cost | concrete work |
| --- | --- | --- | --- | --- | --- | --- | --- | --- | --- | --- | --- | --- |
|  | 1 | **DOG HOUSE** |  |  | 2013-01-07 | 2013-04-22 |  |  |  |  |  |  |
|  | 1 | **CIVIL SCOPE** |  |  | 2013-01-07 | 2013-04-22 |  |  |  |  |  |  |
| A2070 |  | Excavation |  | 4d | 2013-01-07 | 2013-01-10 | A1060 FS+140d | 69d | 0d |  |  |  |
| A7070 |  | cash | level of effort | 106d | 2013-01-07 | 2013-04-22 | A2070 SS | 69d | 0d |  | 35 |  |
| A2080 |  | P.c&R.c footing |  | 7d | 2013-01-11 | 2013-01-17 | A2070 | 69d | 0d | CARPENTER [20 h]; STEEL LABOUR [20 h] |  | conc |
| A2090 |  | Ground floor slab |  | 14d | 2013-01-18 | 2013-01-31 | A2080 | 69d | 0d | CARPENTER [30 h]; STEEL LABOUR [30 h] |  | conc |
|  | 2 | **ARCH SCOPE** |  |  | 2013-02-11 | 2013-04-19 |  |  |  |  |  |  |
| A2110 |  | Masonry works |  | 20d | 2013-02-11 | 2013-03-02 | A2090 FS+10d | 69d | 0d | Brickwork Labor [61 h] |  |  |
| A2270 |  | Plaster works |  | 15d | 2013-03-03 | 2013-03-17 | A2110 | 69d | 0d | finishes worker [75 h] |  |  |
| A2280 |  | Flooring works |  | 15d | 2013-03-18 | 2013-04-01 | A2270 | 69d | 0d | finishes worker [75 h] |  |  |
| A2290 |  | Doors&windows erection |  | 3d | 2013-04-02 | 2013-04-04 | A2280 | 69d | 0d | finishes worker [15 h] |  |  |
| A2300 |  | False ceiling |  | 5d | 2013-04-05 | 2013-04-09 | A2290 | 69d | 0d | finishes worker [25 h] |  |  |
| A2310 |  | Painting works |  | 10d | 2013-04-10 | 2013-04-19 | A2300 | 69d | 0d | finishes worker [50 h] |  |  |
|  | 3 | **ELECTRICAL SCOPE** |  |  | 2013-03-03 | 2013-04-22 |  |  |  |  |  |  |
| A3230 |  | Grounding&bonding |  | 4d | 2013-03-03 | 2013-03-06 | A2270 SS | 113d | 44d |  |  |  |
| A3170 |  | Conduits&outlets |  | 10d | 2013-03-08 | 2013-03-17 | A2270 SS, A2270 FF | 105d |  |  |  |  |
| A3180 |  | Cable trays |  | 5d | 2013-04-02 | 2013-04-06 | A2280 | 85d |  |  |  |  |
| A3190 |  | Telecommunications system & outlets |  | 6d | 2013-04-08 | 2013-04-13 | A3220 FF | 78d |  |  |  |  |
| A3200 |  | Fire alarm system |  | 5d | 2013-04-10 | 2013-04-14 | A2300 | 77d |  |  |  |  |
| A3210 |  | Wires&cables |  | 1d | 2013-04-10 | 2013-04-10 | A2310 SS | 81d |  |  |  |  |
| A3220 |  | Lighting & power panels |  | 4d | 2013-04-10 | 2013-04-13 | A2300 | 78d | 0d |  |  |  |
| A3750 |  | Equipment installation |  | 3d | 2013-04-20 | 2013-04-22 | A3230, A2310, A7070 FF | 69d |  |  |  |  |
|  | 4 | **MECHANICAL SCOPE** |  |  | 2013-04-20 | 2013-04-20 |  |  |  |  |  |  |
|  | 2 | **PLUMBING WORKS** |  |  |  |  |  |  |  |  |  |  |
|  | 1 | **HVAC WORKS** |  |  | 2013-04-20 | 2013-04-20 |  |  |  |  |  |  |
| A5740 |  | Split units |  | 1d | 2013-04-20 | 2013-04-20 | A2310 | 71d |  |  |  |  |

Notes:
- A7070: Expenses: (New Expense Item) 35

| ID | WBS | Activity | Type | Duration | Start | Finish | Predecessors | Total float | Free float | Resources | Cost | concrete work |
| --- | --- | --- | --- | --- | --- | --- | --- | --- | --- | --- | --- | --- |
|  | 3 | **ADMIN.BUILDING CANTEEN** |  |  | 2012-08-20 | 2013-05-15 |  |  |  |  |  |  |
|  | 1 | **CIVIL SCOPE** |  |  | 2012-08-20 | 2013-05-10 |  |  |  |  |  |  |
| A1420 |  | Excavation |  | 10d | 2012-08-20 | 2012-08-29 | A1060 | 46d | 0d |  |  |  |
| A7080 |  | cash | level of effort | 264d | 2012-08-20 | 2013-05-10 | A1420 SS | 51d | 0d |  | 138 |  |
| A1430 |  | P.c&R.c footing |  | 14d | 2012-08-30 | 2012-09-12 | A1420 | 46d | 0d | CARPENTER [200 h]; STEEL LABOUR [112 h] |  | conc |
| A1440 |  | R.c columns |  | 14d | 2012-09-13 | 2012-09-26 | A1430 | 46d | 0d | CARPENTER [200 h]; STEEL LABOUR [112 h] |  | conc |
| A1450 |  | Ground floor slab |  | 30d | 2012-09-27 | 2012-10-26 | A1440 | 46d | 0d | CARPENTER [450 h]; STEEL LABOUR [240 h] |  | conc |
| A2000 |  | First floor column |  | 14d | 2012-10-27 | 2012-11-09 | A1450 | 46d | 0d | CARPENTER [300 h] |  |  |
| A2010 |  | First floor slab |  | 25d | 2012-11-10 | 2012-12-04 | A2000 | 46d | 0d | CARPENTER [400 h]; STEEL LABOUR [240 h] |  | conc |
|  | 2 | **ARCH SCOPE** |  |  | 2013-01-04 | 2013-05-05 |  |  |  |  |  |  |
| A1460 |  | masonry works |  | 30d | 2013-01-04 | 2013-02-02 | A2010 FS+30d | 46d | 0d | Brickwork Labor [1377 h]; Brickwork Labor [202 h] |  |  |
| A2320 |  | Plaster works |  | 30d | 2013-02-08 | 2013-03-09 | A1460, A3850 SS+5d | 46d | 0d | finishes worker [150 h] |  |  |
| A2330 |  | Flooring works |  | 20d | 2013-03-10 | 2013-03-29 | A2320 | 46d | 0d | finishes worker [100 h] |  |  |
| A2340 |  | Doors&windows erection |  | 10d | 2013-03-30 | 2013-04-08 | A2330 | 46d | 0d | finishes worker [50 h] |  |  |
| A2350 |  | False ceiling |  | 12d | 2013-04-09 | 2013-04-20 | A2340, A5510 | 46d | 0d | finishes worker [60 h] |  |  |
| A2360 |  | Painting works |  | 15d | 2013-04-21 | 2013-05-05 | A2350 | 46d | 0d | finishes worker [75 h] |  |  |
|  | 3 | **ELECTRICAL SCOPE** |  |  | 2013-02-03 | 2013-05-15 |  |  |  |  |  |  |
| A3300 |  | Grounding&bonding |  | 4d | 2013-02-03 | 2013-02-06 | A3850 SS | 137d | 91d |  |  |  |
| A3240 |  | Conduits&outlets |  | 80d | 2013-02-08 | 2013-04-28 | A2320 SS, A2320 FF | 63d |  |  |  |  |
| A3250 |  | Cable trays |  | 40d | 2013-03-30 | 2013-05-08 | A2330 | 53d |  |  |  |  |
| A3280 |  | Wires&cables |  | 30d | 2013-04-09 | 2013-05-08 | A2350 SS | 53d |  |  |  |  |
| A3270 |  | Fire alarm system |  | 20d | 2013-04-21 | 2013-05-10 | A2350 | 51d |  |  |  |  |
| A3290 |  | Lighting & power panels |  | 14d | 2013-04-21 | 2013-05-04 | A2350 | 57d | 0d |  |  |  |
| A3260 |  | Telecommunications system & outlets |  | 8d | 2013-04-27 | 2013-05-04 | A3290 FF | 57d |  |  |  |  |
| A3760 |  | Equipment installation |  | 7d | 2013-05-09 | 2013-05-15 | A3300, A2360 FS+3d | 46d | 0d |  |  |  |

Notes:
- A7080: Expenses: (New Expense Item) 138

| ID | WBS | Activity | Type | Duration | Start | Finish | Predecessors | Total float | Free float | Resources | Cost | concrete work |
| --- | --- | --- | --- | --- | --- | --- | --- | --- | --- | --- | --- | --- |
|  | 4 | **MECHANICAL SCOPE** |  |  | 2013-02-03 | 2013-05-12 |  |  |  |  |  |  |
|  | 2 | **PLUMBING WORKS** |  |  | 2013-02-03 | 2013-05-10 |  |  |  |  |  |  |
| A3850 |  | Plumbing works(first fix) |  | 15d | 2013-02-03 | 2013-02-17 | A1460 | 46d | 0d | MEP WORKER [165 h] |  |  |
| A3860 |  | Plumbing works(second fix) |  | 15d | 2013-04-26 | 2013-05-10 | A2360 SS+5d, A7080 FF | 51d |  |  |  |  |
|  | 1 | **HVAC WORKS** |  |  | 2013-03-10 | 2013-05-12 |  |  |  |  |  |  |
| A5510 |  | Duct work |  | 30d | 2013-03-10 | 2013-04-08 | A2320 | 46d | 0d |  |  |  |
| A5470 |  | Split units |  | 5d | 2013-05-06 | 2013-05-10 | A2360 | 51d |  |  |  |  |
| A5480 |  | Air handling unit |  | 7d | 2013-05-06 | 2013-05-12 | A2360 | 49d |  |  |  |  |
| A5490 |  | Chillers installation |  | 7d | 2013-05-06 | 2013-05-12 | A2360 | 49d |  |  |  |  |
|  | 22 | **Oil police building** |  |  | 2012-10-29 | 2013-05-07 |  |  |  |  |  |  |
|  | 1 | **CIVIL SCOPE** |  |  | 2012-10-29 | 2013-05-07 |  |  |  |  |  |  |
| A8140 |  | Excavation |  | 7d | 2012-10-29 | 2012-11-04 | A1060 FS+70d | 54d | 0d |  |  |  |
| A8360 |  | cash | level of effort | 191d | 2012-10-29 | 2013-05-07 | A8140 SS | 54d | 0d |  | 69 |  |
| A8150 |  | P.c&R.c footing |  | 14d | 2012-11-05 | 2012-11-18 | A8140 | 54d | 0d | CARPENTER [40 h]; STEEL LABOUR [40 h] |  | conc |
| A8160 |  | R.c columns |  | 10d | 2012-11-19 | 2012-11-28 | A8150 | 54d | 0d | CARPENTER [30 h]; STEEL LABOUR [30 h] |  | conc |
| A8170 |  | Ground floor slab |  | 14d | 2012-11-29 | 2012-12-12 | A8160 | 54d | 0d | CARPENTER [200 h]; STEEL LABOUR [112 h] |  | conc |
|  | 2 | **ARCH SCOPE** |  |  | 2012-12-23 | 2013-04-17 |  |  |  |  |  |  |
| A8180 |  | masonry works |  | 20d | 2012-12-23 | 2013-01-11 | A8170 FS+10d | 54d | 0d | Brickwork Labor [160 h] |  |  |
| A8190 |  | Plaster works |  | 20d | 2013-01-18 | 2013-02-06 | A8180, A8240 | 54d | 0d | finishes worker [100 h] |  |  |
| A8200 |  | Flooring works |  | 15d | 2013-02-07 | 2013-02-21 | A8190 | 54d | 0d | finishes worker [75 h] |  |  |
| A8220 |  | Doors&windows erection |  | 7d | 2013-02-22 | 2013-02-28 | A8200 | 77d | 23d | finishes worker [35 h] |  |  |
| A8230 |  | False ceiling |  | 15d | 2013-03-24 | 2013-04-07 | A8220, A8280 | 54d | 0d | finishes worker [75 h] |  |  |
| A8210 |  | Painting works |  | 10d | 2013-04-08 | 2013-04-17 | A8230 | 54d | 0d | finishes worker [50 h] |  |  |
|  | 3 | **ELECTRICAL SCOPE** |  |  | 2013-01-12 | 2013-05-07 |  |  |  |  |  |  |
| A8310 |  | Grounding&bonding |  | 5d | 2013-01-12 | 2013-01-16 | A8240 SS | 158d | 91d |  |  |  |
| A8260 |  | Conduits&outlets |  | 7d | 2013-01-31 | 2013-02-06 | A8190 SS, A8190 FF | 144d |  |  |  |  |
| A8280 |  | Cable trays |  | 30d | 2013-02-22 | 2013-03-23 | A8200 | 54d | 0d |  |  |  |
| A8270 |  | Lighting & power panels |  | 8d | 2013-04-08 | 2013-04-15 | A8230 | 76d | 0d |  |  |  |
| A8290 |  | Telecommunications system & outlets |  | 8d | 2013-04-08 | 2013-04-15 | A8270 FF | 76d |  |  |  |  |
| A8300 |  | Fire alarm system |  | 15d | 2013-04-08 | 2013-04-22 | A8230 | 69d |  |  |  |  |
| A8320 |  | Wires&cables |  | 30d | 2013-04-08 | 2013-05-07 | A8210 SS, A8360 FF | 54d |  |  |  |  |
| A8330 |  | Equipment installation |  | 7d | 2013-04-18 | 2013-04-24 | A8310, A8210 | 67d |  |  |  |  |

Notes:
- A8360: Expenses: (New Expense Item) 69

| ID | WBS | Activity | Type | Duration | Start | Finish | Predecessors | Total float | Free float | Resources | Cost | concrete work |
| --- | --- | --- | --- | --- | --- | --- | --- | --- | --- | --- | --- | --- |
|  | 4 | **MECHANICAL SCOPE** |  |  | 2013-01-12 | 2013-04-27 |  |  |  |  |  |  |
|  | 2 | **PLUMBING WORKS** |  |  | 2013-01-12 | 2013-04-23 |  |  |  |  |  |  |
| A8240 |  | Plumbing works(first fix) |  | 6d | 2013-01-12 | 2013-01-17 | A8180 | 54d | 0d | MEP WORKER |  |  |
| A8250 |  | Plumbing works(second fix) |  | 6d | 2013-04-18 | 2013-04-23 | A8210 | 68d |  |  |  |  |
|  | 1 | **HVAC WORKS** |  |  | 2013-02-22 | 2013-04-27 |  |  |  |  |  |  |
| A8340 |  | Duct work |  | 2d | 2013-02-22 | 2013-02-23 | A8200 | 127d |  |  |  |  |
| A8350 |  | VRF units |  | 10d | 2013-04-18 | 2013-04-27 | A8210 | 64d |  |  |  |  |
|  | 4 | **SECURITY&SAFETY INDUCTION CENTER** |  |  | 2012-10-09 | 2013-05-03 |  |  |  |  |  |  |
|  | 1 | **CIVIL SCOPE** |  |  | 2012-10-09 | 2013-05-03 |  |  |  |  |  |  |
| A1120 |  | Excavation |  | 7d | 2012-10-09 | 2012-10-15 | A1060 FS+50d | 58d | 0d |  |  |  |
| A7090 |  | cash | level of effort | 207d | 2012-10-09 | 2013-05-03 | A1120 SS | 58d | 0d |  | 69 |  |
| A1130 |  | P.c&R.c footing |  | 14d | 2012-10-16 | 2012-10-29 | A1120 | 58d | 0d | CARPENTER [40 h]; STEEL LABOUR [40 h] |  | conc |
| A1140 |  | R.c columns |  | 7d | 2012-10-30 | 2012-11-05 | A1130 | 58d | 0d | CARPENTER [40 h]; STEEL LABOUR [40 h] |  | conc |
| A1150 |  | Ground floor slab |  | 30d | 2012-11-06 | 2012-12-05 | A1140 | 58d | 0d | CARPENTER [90 h]; STEEL LABOUR [90 h] |  | conc |
|  | 2 | **ARCH SCOPE** |  |  | 2012-12-20 | 2013-04-18 |  |  |  |  |  |  |
| A1160 |  | masonry works |  | 30d | 2012-12-20 | 2013-01-18 | A1150 FS+14d | 58d | 0d | Brickwork Labor [140 h] |  |  |
| A2370 |  | Plaster works |  | 25d | 2013-01-19 | 2013-02-12 | A1160 | 58d | 0d | finishes worker [125 h] |  |  |
| A2380 |  | Flooring works |  | 25d | 2013-02-13 | 2013-03-09 | A2370 | 58d | 0d | finishes worker [125 h] |  |  |
| A2390 |  | Doors&windows erection |  | 10d | 2013-03-10 | 2013-03-19 | A2380 | 58d | 0d | finishes worker [50 h] |  |  |
| A2400 |  | False ceiling |  | 15d | 2013-03-20 | 2013-04-03 | A2390, A5560 | 58d | 0d | finishes worker [75 h] |  |  |
| A2410 |  | Painting works |  | 15d | 2013-04-04 | 2013-04-18 | A2400 | 58d | 0d | finishes worker [75 h] |  |  |
|  | 4 | **MECHANICAL SCOPE** |  |  | 2013-01-19 | 2013-05-03 |  |  |  |  |  |  |
|  | 2 | **PLUMBING WORKS** |  |  | 2013-01-19 | 2013-05-03 |  |  |  |  |  |  |
| A3870 |  | Plumbing works(first fix) |  | 15d | 2013-01-19 | 2013-02-02 | A1160 | 148d |  | MEP WORKER |  |  |
| A3880 |  | Plumbing works(second fix) |  | 15d | 2013-04-19 | 2013-05-03 | A2410, A7090 FF | 58d |  |  |  |  |

Notes:
- A7090: Expenses: (New Expense Item) 69

| ID | WBS | Activity | Type | Duration | Start | Finish | Predecessors | Total float | Free float | Resources | Cost | concrete work |
| --- | --- | --- | --- | --- | --- | --- | --- | --- | --- | --- | --- | --- |
|  | 1 | **HVAC WORKS** |  |  | 2013-02-13 | 2013-04-28 |  |  |  |  |  |  |
| A5560 |  | Duct work |  | 2d | 2013-02-13 | 2013-02-14 | A2370 | 91d | 33d |  |  |  |
| A5570 |  | VRF units |  | 10d | 2013-04-19 | 2013-04-28 | A2410 | 63d |  |  |  |  |
|  | 5 | **SECURE COMMUNICATION BUILDING** |  |  | 2012-11-18 | 2013-04-03 |  |  |  |  |  |  |
|  | 1 | **CIVIL SCOPE** |  |  | 2012-11-18 | 2013-04-02 |  |  |  |  |  |  |
| A1000 |  | Excavation |  | 7d | 2012-11-18 | 2012-11-24 | A1060 FS+90d | 88d | 0d | CARPENTER [56 h]; Brickwork Labor [56 h] |  |  |
| A7100 |  | cash | level of effort | 136d | 2012-11-18 | 2013-04-02 | A1000 SS | 89d | 0d |  | 52 |  |
| A1010 |  | P.c&R.c footing |  | 14d | 2012-11-25 | 2012-12-08 | A1000 | 88d | 0d | CARPENTER [60 h]; STEEL LABOUR [60 h] |  | conc |
| A1020 |  | R.c columns |  | 10d | 2012-12-09 | 2012-12-18 | A1010 | 88d | 0d | CARPENTER [60 h]; STEEL LABOUR [60 h] |  | conc |
| A1030 |  | Ground floor slab |  | 20d | 2012-12-19 | 2013-01-07 | A1020 | 88d | 0d | CARPENTER [40 h]; STEEL LABOUR [40 h] |  | conc |
|  | 2 | **ARCH SCOPE** |  |  | 2013-01-28 | 2013-03-26 |  |  |  |  |  |  |
| A1040 |  | masonry works |  | 20d | 2013-01-28 | 2013-02-16 | A1030 FS+20d | 88d | 0d | Brickwork Labor [100 h] |  |  |
| A2420 |  | Plaster works |  | 15d | 2013-02-17 | 2013-03-03 | A1040 | 88d | 0d | finishes worker [75 h] |  |  |
| A2430 |  | Flooring works |  | 10d | 2013-03-04 | 2013-03-13 | A2420 | 88d | 0d | finishes worker [50 h] |  |  |
| A2440 |  | Doors&windows erection |  | 3d | 2013-03-14 | 2013-03-16 | A2430 | 88d | 0d | finishes worker [15 h] |  |  |
| A2460 |  | Painting works |  | 10d | 2013-03-17 | 2013-03-26 | A2440 | 88d | 0d | finishes worker [50 h] |  |  |
|  | 3 | **ELECTRICAL SCOPE** |  |  | 2013-02-17 | 2013-04-03 |  |  |  |  |  |  |
| A3380 |  | Conduits&outlets |  | 15d | 2013-02-17 | 2013-03-03 | A2420 SS, A2420 FF | 119d |  |  |  |  |
| A3390 |  | Cable trays |  | 7d | 2013-03-14 | 2013-03-20 | A2430 | 102d |  |  |  |  |
| A3410 |  | Fire alarm system |  | 10d | 2013-03-14 | 2013-03-23 | A2430 | 99d |  |  |  |  |
| A3430 |  | Lighting & power panels |  | 8d | 2013-03-14 | 2013-03-21 | A2430 | 96d | 0d |  |  |  |
| A3400 |  | Telecommunications system & outlets |  | 5d | 2013-03-22 | 2013-03-26 | A3430 | 96d |  |  |  |  |
| A3420 |  | Wires&cables |  | 8d | 2013-03-27 | 2013-04-03 | A2460 | 88d |  |  |  |  |
| A3440 |  | Grounding&bonding |  | 4d | 2013-03-27 | 2013-03-30 | A3950 SS | 89d | 0d |  |  |  |
| A3780 |  | Equipment installation |  | 3d | 2013-03-31 | 2013-04-02 | A3440, A2460, A7100 FF | 89d |  |  |  |  |

Notes:
- A7100: Expenses: (New Expense Item) 52

| ID | WBS | Activity | Type | Duration | Start | Finish | Predecessors | Total float | Free float | Resources | Cost | concrete work |
| --- | --- | --- | --- | --- | --- | --- | --- | --- | --- | --- | --- | --- |
|  | 4 | **MECHANICAL SCOPE** |  |  | 2013-03-04 | 2013-03-30 |  |  |  |  |  |  |
|  | 2 | **PLUMBING WORKS** |  |  | 2013-03-27 | 2013-03-30 |  |  |  |  |  |  |
| A3950 |  | Plumbing works(first fix) |  | 4d | 2013-03-27 | 2013-03-30 | A2460 | 89d | 0d | MEP WORKER |  |  |
| A3960 |  | Plumbing works(second fix) |  | 4d | 2013-03-27 | 2013-03-30 | A2460 | 92d |  |  |  |  |
|  | 1 | **HVAC WORKS** |  |  | 2013-03-04 | 2013-03-28 |  |  |  |  |  |  |
| A5590 |  | Duct work |  | 2d | 2013-03-04 | 2013-03-05 | A2420 | 117d |  |  |  |  |
| A5580 |  | Air handling unit |  | 2d | 2013-03-27 | 2013-03-28 | A2460 | 94d |  |  |  |  |
|  | 6 | **CHANGE HOUSE** |  |  | 2012-08-20 | 2013-05-08 |  |  |  |  |  |  |
|  | 1 | **CIVIL SCOPE** |  |  | 2012-08-20 | 2013-05-08 |  |  |  |  |  |  |
| A1360 |  | Excavation |  | 7d | 2012-08-20 | 2012-08-26 | A1060 | 53d | 0d |  |  |  |
| A7110 |  | cash | level of effort | 262d | 2012-08-20 | 2013-05-08 | A1360 SS | 53d | 0d |  | 52 |  |
| A1370 |  | P.c&R.c footing |  | 14d | 2012-08-27 | 2012-09-09 | A1360 | 53d | 0d | CARPENTER [50 h]; STEEL LABOUR [50 h] |  | conc |
| A1380 |  | R.c columns |  | 10d | 2012-09-10 | 2012-09-19 | A1370 | 53d | 0d | CARPENTER [50 h]; STEEL LABOUR [50 h] |  | conc |
| A1390 |  | Ground floor slab |  | 20d | 2012-09-20 | 2012-10-09 | A1380 | 53d | 0d | CARPENTER [70 h]; STEEL LABOUR [70 h] |  | conc |
|  | 2 | **ARCH SCOPE** |  |  | 2012-10-24 | 2013-02-24 |  |  |  |  |  |  |
| A1400 |  | masonry works |  | 20d | 2012-10-24 | 2012-11-12 | A1390 FS+14d | 53d | 0d | Brickwork Labor [109 h] |  |  |
| A2470 |  | Plaster works |  | 15d | 2012-12-03 | 2012-12-17 | A1400, A3970 | 53d | 0d | finishes worker [75 h] |  |  |
| A2480 |  | Flooring works |  | 15d | 2012-12-18 | 2013-01-01 | A2470 | 53d | 0d | finishes worker [75 h] |  |  |
| A2490 |  | Doors&windows erection |  | 3d | 2013-01-02 | 2013-01-04 | A2480 | 90d | 37d | finishes worker [15 h] |  |  |
| A2500 |  | False ceiling |  | 7d | 2013-02-11 | 2013-02-17 | A2490, A3460, A5730 | 53d | 0d | finishes worker [35 h] |  |  |
| A2510 |  | Painting works |  | 7d | 2013-02-18 | 2013-02-24 | A2500 | 53d | 0d | finishes worker [35 h] |  |  |
|  | 3 | **ELECTRICAL SCOPE** |  |  | 2012-11-13 | 2013-05-08 |  |  |  |  |  |  |
| A3510 |  | Grounding&bonding |  | 8d | 2012-11-13 | 2012-11-20 | A3970 SS | 215d | 0d |  |  |  |
| A3790 |  | Equipment installation |  | 7d | 2012-11-21 | 2012-11-27 | A3510 | 215d |  |  |  |  |
| A3450 |  | Conduits&outlets |  | 60d | 2012-12-03 | 2013-01-31 | A2470 SS, A2470 FF | 150d |  |  |  |  |
| A3460 |  | Cable trays |  | 40d | 2013-01-02 | 2013-02-10 | A2480 | 53d | 0d |  |  |  |
| A3480 |  | Fire alarm system |  | 70d | 2013-02-18 | 2013-04-28 | A2500 | 63d |  |  |  |  |
| A3490 |  | Wires&cables |  | 80d | 2013-02-18 | 2013-05-08 | A2510 SS, A7110 FF | 53d |  |  |  |  |
| A3500 |  | Lighting & power panels |  | 40d | 2013-02-18 | 2013-03-29 | A2500 | 93d | 0d |  |  |  |
| A3470 |  | Telecommunications system & outlets |  | 8d | 2013-03-22 | 2013-03-29 | A3500 FF | 93d |  |  |  |  |

Notes:
- A7110: Expenses: (New Expense Item) 52

| ID | WBS | Activity | Type | Duration | Start | Finish | Predecessors | Total float | Free float | Resources | Cost | concrete work |
| --- | --- | --- | --- | --- | --- | --- | --- | --- | --- | --- | --- | --- |
|  | 4 | **MECHANICAL SCOPE** |  |  | 2012-11-13 | 2013-03-16 |  |  |  |  |  |  |
|  | 2 | **PLUMBING WORKS** |  |  | 2012-11-13 | 2013-03-16 |  |  |  |  |  |  |
| A3970 |  | Plumbing works(first fix) |  | 20d | 2012-11-13 | 2012-12-02 | A1400 | 53d | 0d | MEP WORKER |  |  |
| A3980 |  | Plumbing works(second fix) |  | 20d | 2013-02-25 | 2013-03-16 | A2510 | 106d |  |  |  |  |
|  | 1 | **HVAC WORKS** |  |  | 2012-12-18 | 2013-02-26 |  |  |  |  |  |  |
| A5730 |  | Duct work |  | 2d | 2012-12-18 | 2012-12-19 | A2470 | 106d | 53d |  |  |  |
| A5720 |  | Air handling unit |  | 2d | 2013-02-25 | 2013-02-26 | A2510 | 124d |  |  |  |  |
|  | 7 | **MAIN CONTROL BUILDING** |  |  | 2012-08-20 | 2013-03-21 |  |  |  |  |  |  |
|  | 1 | **CIVIL SCOPE** |  |  | 2012-08-20 | 2013-03-21 |  |  |  |  |  |  |
| A1480 |  | Excavation |  | 7d | 2012-08-20 | 2012-08-26 | A1060 | 101d | 0d |  |  |  |
| A7120 |  | cash | level of effort | 214d | 2012-08-20 | 2013-03-21 | A1480 SS | 101d | 0d |  | 166 |  |
| A1490 |  | P.c&R.c footing |  | 14d | 2012-08-27 | 2012-09-09 | A1480 | 101d | 0d | CARPENTER [700 h]; STEEL LABOUR [150 h] |  | conc |
| A1500 |  | R.c columns |  | 14d | 2012-09-10 | 2012-09-23 | A1490 | 101d | 0d | CARPENTER [700 h]; STEEL LABOUR [150 h] |  | conc |
| A1510 |  | Ground floor slab |  | 20d | 2012-09-24 | 2012-10-13 | A1500 | 101d | 0d | CARPENTER [1000 h]; STEEL LABOUR [300 h] |  | conc |
|  | 2 | **ARCH SCOPE** |  |  | 2012-11-08 | 2013-03-07 |  |  |  |  |  |  |
| A1520 |  | masonry works |  | 25d | 2012-11-08 | 2012-12-02 | A1510 FS+25d | 101d | 0d | Brickwork Labor [600 h]; Brickwork Labor [140 h] |  |  |
| A2520 |  | Plaster works |  | 20d | 2012-12-08 | 2012-12-27 | A1520, A3890 | 101d | 0d | finishes worker [100 h] |  |  |
| A2530 |  | Flooring works |  | 20d | 2012-12-28 | 2013-01-16 | A2520 | 114d | 0d | finishes worker [100 h] |  |  |
| A2540 |  | Doors&windows erection |  | 7d | 2013-01-17 | 2013-01-23 | A2530 | 114d | 13d | finishes worker [35 h] |  |  |
| A2550 |  | False ceiling |  | 15d | 2013-02-06 | 2013-02-20 | A2540, A5640 | 101d | 0d | finishes worker [75 h] |  |  |
| A2560 |  | Painting works |  | 15d | 2013-02-21 | 2013-03-07 | A2550 | 101d | 0d | finishes worker [75 h] |  |  |
|  | 3 | **ELECTRICAL SCOPE** |  |  | 2012-12-03 | 2013-03-14 |  |  |  |  |  |  |
| A3580 |  | Grounding&bonding |  | 5d | 2012-12-03 | 2012-12-07 | A3890 SS | 198d | 90d |  |  |  |
| A3520 |  | Conduits&outlets |  | 30d | 2012-12-08 | 2013-01-06 | A2520 SS, A2520 FF | 175d |  |  |  |  |
| A3530 |  | Cable trays |  | 15d | 2013-01-17 | 2013-01-31 | A2530 | 150d |  |  |  |  |
| A3540 |  | Telecommunications system & outlets |  | 8d | 2013-02-21 | 2013-02-28 | A3570 FF | 122d |  |  |  |  |
| A3550 |  | Fire alarm system |  | 7d | 2013-02-21 | 2013-02-27 | A2550 | 123d |  |  |  |  |
| A3560 |  | Wires&cables |  | 5d | 2013-02-21 | 2013-02-25 | A2560 SS | 125d |  |  |  |  |
| A3570 |  | Lighting & power panels |  | 8d | 2013-02-21 | 2013-02-28 | A2550 | 122d | 0d |  |  |  |
| A3800 |  | Equipment installation |  | 7d | 2013-03-08 | 2013-03-14 | A3580, A2560 | 108d |  |  |  |  |

Notes:
- A7120: Expenses: (New Expense Item) 166

| ID | WBS | Activity | Type | Duration | Start | Finish | Predecessors | Planned start | Planned finish | Total float | Free float | Resources | Cost | concrete work |
| --- | --- | --- | --- | --- | --- | --- | --- | --- | --- | --- | --- | --- | --- | --- |
|  | 4 | **MECHANICAL SCOPE** |  |  | 2012-12-03 | 2013-03-21 |  |  |  |  |  |  |  |  |
|  | 2 | **PLUMBING WORKS** |  |  | 2012-12-03 | 2013-03-12 |  |  |  |  |  |  |  |  |
| A3890 |  | Plumbing works(first fix) |  | 33d | 2012-12-03 | 2012-12-07 | A1520 | 2012-12-03 | 2013-01-04 | 101d | 0d | MEP WORKER |  |  |
| A3900 |  | Plumbing works(second fix) |  | 5d | 2013-03-08 | 2013-03-12 | A2560 |  |  | 110d |  |  |  |  |
|  | 1 | **HVAC WORKS** |  |  | 2012-12-28 | 2013-03-21 |  |  |  |  |  |  |  |  |
| A5640 |  | Duct work |  | 40d | 2012-12-28 | 2013-02-05 | A2520 |  |  | 101d | 0d |  |  |  |
| A5650 |  | Piping |  | 40d | 2012-12-28 | 2013-02-05 | A2520 |  |  | 145d |  |  |  |  |
| A5620 |  | Air handling unit |  | 7d | 2013-03-08 | 2013-03-14 | A2560 |  |  | 108d |  |  |  |  |
| A5630 |  | Chillers installation |  | 14d | 2013-03-08 | 2013-03-21 | A2560, A7120 FF |  |  | 101d | 0d |  |  |  |
|  | 8 | **LABORATORY BUILDING** |  |  | 2012-10-29 | 2013-04-04 |  |  |  |  |  |  |  |  |
|  | 1 | **CIVIL SCOPE** |  |  | 2012-10-29 | 2013-04-04 |  |  |  |  |  |  |  |  |
| A1540 |  | Excavation |  | 5d | 2012-10-29 | 2012-11-02 | A1060 FS+70d |  |  | 87d | 0d |  |  |  |
| A7130 |  | cash | level of effort | 158d | 2012-10-29 | 2013-04-04 | A1540 SS |  |  | 87d | 0d |  | 156 |  |
| A1550 |  | P.c&R.c footing |  | 10d | 2012-11-03 | 2012-11-12 | A1540 |  |  | 87d | 0d | CARPENTER [70 h]; STEEL LABOUR [70 h] |  | conc |
| A1560 |  | R.c columns |  | 10d | 2012-11-13 | 2012-11-22 | A1550 |  |  | 87d | 0d | CARPENTER [70 h]; STEEL LABOUR [35 h] |  | conc |
| A1570 |  | Ground floor slab |  | 14d | 2012-11-23 | 2012-12-06 | A1560 |  |  | 87d | 0d | CARPENTER [156 h]; STEEL LABOUR [80 h] |  | conc |
|  | 2 | **ARCH SCOPE** |  |  | 2012-12-21 | 2013-03-05 |  |  |  |  |  |  |  |  |
| A1580 |  | masonry works |  | 20d | 2012-12-21 | 2013-01-09 | A1570 FS+14d |  |  | 87d | 0d | Brickwork Labor [220 h] |  |  |
| A2570 |  | Plaster works |  | 14d | 2013-01-10 | 2013-01-23 | A1580 |  |  | 87d | 0d | finishes worker [5 h] |  |  |
| A2580 |  | Flooring works |  | 14d | 2013-01-24 | 2013-02-06 | A2570 |  |  | 87d | 0d | finishes worker [5 h] |  |  |
| A2590 |  | Doors&windows erection |  | 7d | 2013-02-07 | 2013-02-13 | A2580 |  |  | 87d | 0d | finishes worker [5 h] |  |  |
| A2600 |  | False ceiling |  | 10d | 2013-02-14 | 2013-02-23 | A2590, A5600 |  |  | 87d | 0d | finishes worker [5 h] |  |  |
| A2610 |  | Painting works |  | 10d | 2013-02-24 | 2013-03-05 | A2600 |  |  | 87d | 0d | finishes worker [5 h] |  |  |
|  | 3 | **ELECTRICAL SCOPE** |  |  | 2013-01-10 | 2013-04-04 |  |  |  |  |  |  |  |  |
| A3650 |  | Grounding&bonding |  | 5d | 2013-01-10 | 2013-01-14 | A3910 SS |  |  | 167d |  |  |  |  |
| A3590 |  | Conduits&outlets |  | 7d | 2013-01-17 | 2013-01-23 | A2570 SS, A2570 FF |  |  | 158d |  |  |  |  |
| A3600 |  | Cable trays |  | 30d | 2013-02-07 | 2013-03-08 | A2580 |  |  | 114d |  |  |  |  |
| A3610 |  | Telecommunications system & outlets |  | 8d | 2013-02-24 | 2013-03-03 | A3640 FF |  |  | 119d |  |  |  |  |
| A3620 |  | Fire alarm system |  | 15d | 2013-02-24 | 2013-03-10 | A2600 |  |  | 112d |  |  |  |  |
| A3640 |  | Lighting & power panels |  | 8d | 2013-02-24 | 2013-03-03 | A2600 |  |  | 119d | 0d |  |  |  |
| A3630 |  | Wires&cables |  | 30d | 2013-03-06 | 2013-04-04 | A2610, A7130 FF |  |  | 87d |  |  |  |  |
| A3810 |  | Equipment installation |  | 7d | 2013-03-06 | 2013-03-12 | A2610 |  |  | 110d |  |  |  |  |

Notes:
- A7130: Expenses: (New Expense Item) 121; (New Expense Item)1 35

| ID | WBS | Activity | Duration | Start | Finish | Predecessors | Total float | Free float | Resources | concrete work |
| --- | --- | --- | --- | --- | --- | --- | --- | --- | --- | --- |
|  | 4 | **MECHANICAL SCOPE** |  | 2013-01-10 | 2013-03-20 |  |  |  |  |  |
|  | 2 | **PLUMBING WORKS** |  | 2013-01-10 | 2013-03-20 |  |  |  |  |  |
| A3910 |  | Plumbing works(first fix) | 15d | 2013-01-10 | 2013-01-24 | A1580 | 157d | 0d | MEP WORKER [61 h] |  |
| A3920 |  | Plumbing works(second fix) | 15d | 2013-03-06 | 2013-03-20 | A2610 | 102d |  |  |  |
|  | 1 | **HVAC WORKS** |  | 2013-01-24 | 2013-03-20 |  |  |  |  |  |
| A5600 |  | Duct work | 2d | 2013-01-24 | 2013-01-25 | A2570 | 106d | 19d |  |  |
| A5610 |  | VRF units | 15d | 2013-03-06 | 2013-03-20 | A2610 | 102d |  |  |  |
|  | 9 | **SAMPLE STORE** |  | 2012-09-19 | 2013-03-06 |  |  |  |  |  |
|  | 1 | **CIVIL SCOPE** |  | 2012-09-19 | 2012-11-06 |  |  |  |  |  |
| A1600 |  | Excavation | 5d | 2012-09-19 | 2012-09-23 | A1060 FS+30d | 116d | 0d |  |  |
| A1610 |  | P.c&R.c footing | 14d | 2012-09-24 | 2012-10-07 | A1600 | 116d | 0d | CARPENTER [20 h]; STEEL LABOUR [20 h] | conc |
| A1620 |  | R.c columns | 10d | 2012-10-08 | 2012-10-17 | A1610 | 116d | 0d | CARPENTER [30 h]; STEEL LABOUR [30 h] | conc |
| A1630 |  | Ground floor slab | 20d | 2012-10-18 | 2012-11-06 | A1620 | 116d | 0d | CARPENTER [40 h]; STEEL LABOUR [40 h] | conc |
|  | 2 | **ARCH SCOPE** |  | 2012-11-17 | 2013-02-04 |  |  |  |  |  |
| A1640 |  | masonry works | 20d | 2012-11-17 | 2012-12-06 | A1630 FS+10d | 116d | 0d | Brickwork Labor [60 h] |  |
| A2620 |  | Plaster works | 20d | 2012-12-07 | 2012-12-26 | A1640 | 116d | 0d | finishes worker [100 h] |  |
| A2630 |  | Flooring works | 15d | 2012-12-27 | 2013-01-10 | A2620 | 116d | 0d | finishes worker [75 h] |  |
| A2640 |  | Doors&windows erection | 5d | 2013-01-11 | 2013-01-15 | A2630 | 116d | 0d | finishes worker [25 h] |  |
| A2650 |  | False ceiling | 10d | 2013-01-16 | 2013-01-25 | A2640 | 116d | 0d | finishes worker [50 h] |  |
| A2660 |  | Painting works | 10d | 2013-01-26 | 2013-02-04 | A2650 | 116d | 0d | finishes worker [50 h] |  |
|  | 3 | **ELECTRICAL SCOPE** |  | 2012-12-07 | 2013-03-06 |  |  |  |  |  |
| A3720 |  | Grounding&bonding | 5d | 2012-12-07 | 2012-12-11 | A3930 SS | 201d |  |  |  |
| A3660 |  | Conduits&outlets | 7d | 2012-12-20 | 2012-12-26 | A2620 SS, A2620 FF | 186d |  |  |  |
| A3670 |  | Cable trays | 30d | 2013-01-11 | 2013-02-09 | A2630 | 141d |  |  |  |
| A3680 |  | Telecommunications system & outlets | 8d | 2013-01-26 | 2013-02-02 | A3710 FF | 148d |  |  |  |
| A3690 |  | Fire alarm system | 15d | 2013-01-26 | 2013-02-09 | A2650 | 141d |  |  |  |
| A3710 |  | Lighting & power panels | 8d | 2013-01-26 | 2013-02-02 | A2650 | 148d | 0d |  |  |
| A3700 |  | Wires&cables | 30d | 2013-02-05 | 2013-03-06 | A2660 | 116d |  |  |  |
| A3820 |  | Equipment installation | 7d | 2013-02-05 | 2013-02-11 | A2660 | 139d |  |  |  |

| ID | WBS | Activity | Type | Duration | Start | Finish | Predecessors | Total float | Free float | Resources | Cost | concrete work |
| --- | --- | --- | --- | --- | --- | --- | --- | --- | --- | --- | --- | --- |
|  | 4 | **MECHANICAL SCOPE** |  |  | 2012-12-07 | 2013-02-19 |  |  |  |  |  |  |
|  | 2 | **PLUMBING WORKS** |  |  | 2012-12-07 | 2013-02-19 |  |  |  |  |  |  |
| A3930 |  | Plumbing works(first fix) |  | 15d | 2012-12-07 | 2012-12-21 | A2620 SS | 191d | 0d | MEP WORKER |  |  |
| A3940 |  | Plumbing works(second fix) |  | 15d | 2013-02-05 | 2013-02-19 | A2660 | 131d |  |  |  |  |
|  | 1 | **HVAC WORKS** |  |  | 2013-02-05 | 2013-02-05 |  |  |  |  |  |  |
| A5780 |  | Split units |  | 1d | 2013-02-05 | 2013-02-05 | A2660 | 145d |  |  |  |  |
|  | 10 | **WORKSHOP&WAREHOUSE** |  |  | 2012-08-20 | 2013-03-13 |  |  |  |  |  |  |
|  | 1 | **Concrete building** |  |  | 2012-08-20 | 2013-03-13 |  |  |  |  |  |  |
|  | 1 | **CIVIL SCOPE** |  |  | 2012-08-20 | 2013-03-13 |  |  |  |  |  |  |
| A1660 |  | Excavation |  | 7d | 2012-08-20 | 2012-08-26 | A1060 | 109d | 0d |  |  |  |
| A7140 |  | cash | level of effort | 206d | 2012-08-20 | 2013-03-13 | A1660 SS | 109d | 0d |  | 121 |  |
| A1670 |  | P.c&R.c footing |  | 14d | 2012-08-27 | 2012-09-09 | A1660 | 109d | 0d | CARPENTER [300 h]; STEEL LABOUR [300 h] |  | conc |
| A1680 |  | R.c columns |  | 10d | 2012-09-10 | 2012-09-19 | A1670 | 109d | 0d | CARPENTER [300 h]; STEEL LABOUR [150 h] |  | conc |
| A1690 |  | Ground floor slab |  | 14d | 2012-09-20 | 2012-10-03 | A1680 | 109d | 0d | CARPENTER [100 h]; STEEL LABOUR [100 h] |  | conc |
| A2020 |  | First floor columns |  | 7d | 2012-10-04 | 2012-10-10 | A1690 | 109d | 0d | CARPENTER [300 h]; STEEL LABOUR [100 h] |  | conc |
| A2040 |  | First floor slab |  | 14d | 2012-10-11 | 2012-10-24 | A2020 | 109d | 0d | CARPENTER [100 h]; STEEL LABOUR [100 h] |  | conc |
|  | 2 | **ARCH SCOPE** |  |  | 2012-11-24 | 2013-02-21 |  |  |  |  |  |  |
| A1700 |  | masonry works |  | 20d | 2012-11-24 | 2012-12-13 | A2040 FS+30d | 109d | 0d | Brickwork Labor [300 h] |  |  |
| A2670 |  | Plaster works |  | 20d | 2012-12-14 | 2013-01-02 | A1700 | 109d | 0d | finishes worker [75 h] |  |  |
| A2680 |  | Flooring works |  | 15d | 2013-01-03 | 2013-01-17 | A2670 | 121d | 0d | finishes worker [75 h] |  |  |
| A2690 |  | Doors&windows erection |  | 3d | 2013-01-18 | 2013-01-20 | A2680 | 121d | 12d | finishes worker [15 h] |  |  |
| A2700 |  | False ceiling |  | 10d | 2013-02-02 | 2013-02-11 | A2690, A5680, A5690 | 109d | 0d | finishes worker [50 h] |  |  |
| A2710 |  | Painting works |  | 10d | 2013-02-12 | 2013-02-21 | A2700 | 109d | 0d | finishes worker [50 h] |  |  |
|  | 3 | **ELECTRICAL SCOPE** |  |  | 2012-12-14 | 2013-03-13 |  |  |  |  |  |  |
| A4330 |  | Conduits&outlets |  | 30d | 2012-12-14 | 2013-01-12 | A2670 SS, A2670 FF | 169d |  |  |  |  |
| A4390 |  | Grounding&bonding |  | 7d | 2012-12-14 | 2012-12-20 | A4410 SS | 192d |  |  |  |  |
| A4340 |  | Cable trays |  | 20d | 2013-01-18 | 2013-02-06 | A2680 | 144d |  |  |  |  |
| A4350 |  | Telecommunications system & outlets |  | 10d | 2013-02-10 | 2013-02-19 | A4380 FF | 131d |  |  |  |  |
| A4360 |  | Fire alarm system |  | 10d | 2013-02-12 | 2013-02-21 | A2700 | 129d |  |  |  |  |
| A4370 |  | Wires&cables |  | 30d | 2013-02-12 | 2013-03-13 | A2710 SS | 109d |  |  |  |  |
| A4380 |  | Lighting & power panels |  | 8d | 2013-02-12 | 2013-02-19 | A2700 | 131d | 0d |  |  |  |
| A4400 |  | Equipment installation |  | 7d | 2013-02-22 | 2013-02-28 | A2710 | 122d |  |  |  |  |

Notes:
- A7140: Expenses: (New Expense Item) 121

| ID | WBS | Activity | Type | Duration | Start | Finish | Predecessors | Total float | Free float | Resources | Cost | concrete work |
| --- | --- | --- | --- | --- | --- | --- | --- | --- | --- | --- | --- | --- |
|  | 4 | **MECHANICAL SCOPE** |  |  | 2012-12-14 | 2013-03-13 |  |  |  |  |  |  |
|  | 2 | **PLUMBING WORKS** |  |  | 2012-12-14 | 2013-03-13 |  |  |  |  |  |  |
| A4410 |  | Plumbing works(first fix) |  | 20d | 2012-12-14 | 2013-01-02 | A1700 | 179d | 0d | MEP WORKER |  |  |
| A4420 |  | Plumbing works(second fix) |  | 20d | 2013-02-22 | 2013-03-13 | A2710, A7140 FF | 109d |  |  |  |  |
|  | 1 | **HVAC WORKS** |  |  | 2013-01-03 | 2013-02-28 |  |  |  |  |  |  |
| A5680 |  | Piping |  | 30d | 2013-01-03 | 2013-02-01 | A2670 | 109d | 0d |  |  |  |
| A5690 |  | Duct work |  | 30d | 2013-01-03 | 2013-02-01 | A2670 | 109d | 0d |  |  |  |
| A5660 |  | Air handling unit |  | 7d | 2013-02-22 | 2013-02-28 | A2710 | 122d |  |  |  |  |
| A5670 |  | Chillers installation |  | 7d | 2013-02-22 | 2013-02-28 | A2710 | 122d |  |  |  |  |
|  | 2 | **Steel building** |  |  | 2012-08-20 | 2012-11-18 |  |  |  |  |  |  |
| A4240 |  | Excavation |  | 10d | 2012-08-20 | 2012-08-29 | A1060 | 224d | 0d |  |  |  |
| A4250 |  | P.c&R.c footing |  | 15d | 2012-08-30 | 2012-09-13 | A4240 | 224d | 0d | CARPENTER [80 h]; STEEL LABOUR [80 h] |  | conc |
| A4260 |  | R.c pedestals |  | 14d | 2012-09-14 | 2012-09-27 | A4250 | 224d | 0d | CARPENTER [80 h]; STEEL LABOUR [56 h] |  | conc |
| A4270 |  | Steel structure erection |  | 30d | 2012-09-28 | 2012-10-27 | A4260 | 226d | 0d |  |  |  |
| A4320 |  | Masonry under slab on grade |  | 20d | 2012-09-28 | 2012-10-17 | A4260 | 224d | 0d |  |  |  |
| A4290 |  | Footing insulation |  | 7d | 2012-10-18 | 2012-10-24 | A4320 | 224d | 0d |  |  |  |
| A4300 |  | Backfilling |  | 15d | 2012-10-25 | 2012-11-08 | A4290 | 224d | 0d |  |  |  |
| A4280 |  | Corrugated sheets installation |  | 20d | 2012-10-28 | 2012-11-16 | A4270 | 226d |  |  |  |  |
| A4310 |  | Slab on grade |  | 10d | 2012-11-09 | 2012-11-18 | A4300 | 224d |  |  |  |  |
|  | 11 | **VEHICLE MAINTENANCE BUILDING&FUEL STATION** |  |  | 2012-08-20 | 2013-04-07 |  |  |  |  |  |  |
|  | 1 | **Concrete building** |  |  | 2012-08-20 | 2013-04-07 |  |  |  |  |  |  |
|  | 1 | **CIVIL SCOPE** |  |  | 2012-08-20 | 2013-03-27 |  |  |  |  |  |  |
| A1720 |  | Excavation |  | 7d | 2012-08-20 | 2012-08-26 | A1060 | 109d | 0d |  |  |  |
| A7150 |  | cash | level of effort | 220d | 2012-08-20 | 2013-03-27 | A1720 SS | 95d | 0d |  | 86 |  |
| A1730 |  | P.c&R.c footing |  | 14d | 2012-08-27 | 2012-09-09 | A1720 | 109d | 0d | CARPENTER [50 h]; STEEL LABOUR [50 h] |  | conc |
| A1740 |  | R.c columns |  | 10d | 2012-09-10 | 2012-09-19 | A1730 | 109d | 0d | CARPENTER [50 h]; STEEL LABOUR [50 h] |  | conc |
| A1750 |  | Ground floor slab |  | 20d | 2012-09-20 | 2012-10-09 | A1740 | 109d | 25d | CARPENTER [50 h]; STEEL LABOUR [50 h] |  | conc |
| A1780 |  | First floor columns |  | 10d | 2012-11-04 | 2012-11-13 | A1750, A7840 | 84d | 0d | CARPENTER [50 h]; STEEL LABOUR [50 h] |  | conc |
| A1790 |  | First floor slab |  | 20d | 2012-11-14 | 2012-12-03 | A1780 | 84d | 0d | CARPENTER [50 h]; STEEL LABOUR [50 h] |  | conc |

Notes:
- A7150: Expenses: (New Expense Item) 86

| ID | WBS | Activity | Duration | Start | Finish | Predecessors | Total float | Free float | Resources | concrete work |
| --- | --- | --- | --- | --- | --- | --- | --- | --- | --- | --- |
|  | 2 | **ARCH SCOPE** |  | 2012-12-24 | 2013-03-23 |  |  |  |  |  |
| A1760 |  | masonry works | 25d | 2012-12-24 | 2013-01-17 | A1790 FS+20d | 84d | 0d | Brickwork Labor [92 h] |  |
| A2720 |  | Plaster works | 20d | 2013-01-18 | 2013-02-06 | A1760 | 84d | 0d | finishes worker [75 h] |  |
| A2730 |  | Flooring works | 15d | 2013-02-07 | 2013-02-21 | A2720 | 84d | 0d | finishes worker [50 h] |  |
| A2740 |  | Doors&windows erection | 6d | 2013-02-22 | 2013-02-27 | A2730 | 84d | 0d | finishes worker [15 h] |  |
| A2750 |  | False ceiling | 14d | 2013-02-28 | 2013-03-13 | A2740 | 84d | 0d | finishes worker [70 h] |  |
| A2760 |  | Painting works | 10d | 2013-03-14 | 2013-03-23 | A2750 | 84d | 0d | finishes worker [50 h] |  |
|  | 3 | **ELECTRICAL SCOPE** |  | 2013-01-18 | 2013-04-07 |  |  |  |  |  |
| A5230 |  | Conduits&outlets | 30d | 2013-01-18 | 2013-02-16 | A2720 SS, A2720 FF | 134d |  |  |  |
| A5290 |  | Grounding&bonding | 5d | 2013-01-18 | 2013-01-22 | A5310 SS | 159d |  |  |  |
| A5240 |  | Cable trays | 10d | 2013-03-14 | 2013-03-23 | A2750 | 99d |  |  |  |
| A5250 |  | Telecommunications system & outlets | 8d | 2013-03-14 | 2013-03-21 | A5280 FF | 101d |  |  |  |
| A5260 |  | Fire alarm system | 15d | 2013-03-14 | 2013-03-28 | A2750 | 94d |  |  |  |
| A5280 |  | Lighting & power panels | 8d | 2013-03-14 | 2013-03-21 | A2750 | 101d | 0d |  |  |
| A5270 |  | Wires&cables | 20d | 2013-03-19 | 2013-04-07 | A2760 SS+5d | 84d | 0d |  |  |
| A5300 |  | Equipment installation | 7d | 2013-03-24 | 2013-03-30 | A2760 | 92d |  |  |  |
|  | 4 | **MECHANICAL SCOPE** |  | 2013-01-18 | 2013-03-29 |  |  |  |  |  |
|  | 2 | **PLUMBING WORKS** |  | 2013-01-18 | 2013-03-29 |  |  |  |  |  |
| A5310 |  | Plumbing works(first fix) | 6d | 2013-01-18 | 2013-01-23 | A1760 | 158d | 0d | MEP WORKER |  |
| A5320 |  | Plumbing works(second fix) | 6d | 2013-03-24 | 2013-03-29 | A2760 | 93d |  |  |  |
|  | 1 | **HVAC WORKS** |  | 2013-03-24 | 2013-03-27 |  |  |  |  |  |
| A5790 |  | Split units | 4d | 2013-03-24 | 2013-03-27 | A2760, A7150 FF | 95d |  |  |  |
|  | 2 | **Steel building** |  | 2012-08-20 | 2012-10-14 |  |  |  |  |  |
| b190 |  | Excavation | 5d | 2012-08-20 | 2012-08-24 | A1060 | 259d | 0d |  |  |
| b290 |  | P.c&R.c footing | 10d | 2012-08-25 | 2012-09-03 | b190, b190 FF | 259d | 0d | CARPENTER [80 h]; STEEL LABOUR [80 h] | conc |
| b390 |  | R.c pedestals | 7d | 2012-09-04 | 2012-09-10 | b290 | 259d | 0d | CARPENTER [80 h]; STEEL LABOUR [56 h] | conc |
| b490 |  | Steel structure erection | 15d | 2012-09-11 | 2012-09-25 | b390 | 259d | 0d |  |  |
| b990 |  | Masonry under slab on grade | 10d | 2012-09-11 | 2012-09-20 | b390 | 264d | 5d |  |  |
| b590 |  | Corrugated sheets installation | 10d | 2012-09-26 | 2012-10-05 | b490 | 268d |  |  |  |
| b690 |  | Footing insulation | 7d | 2012-09-26 | 2012-10-02 | b490, b990 | 259d | 0d |  |  |
| b790 |  | Backfilling | 7d | 2012-10-03 | 2012-10-09 | b690 | 259d | 0d |  |  |
| b890 |  | Slab on grade | 5d | 2012-10-10 | 2012-10-14 | b790 | 259d |  |  |  |

| ID | WBS | Activity | Duration | Start | Finish | Predecessors | Total float | Free float | Resources | concrete work |
| --- | --- | --- | --- | --- | --- | --- | --- | --- | --- | --- |
|  | 14 | **GARBAGE WASTE HANDLING** |  | 2012-08-20 | 2013-03-22 |  |  |  |  |  |
|  | 1 | **Concrete building** |  | 2012-11-03 | 2013-03-22 |  |  |  |  |  |
|  | 1 | **CIVIL SCOPE** |  | 2012-11-03 | 2013-01-07 |  |  |  |  |  |
| A1800 |  | Excavation | 7d | 2012-11-03 | 2012-11-09 | A1060 FS+75d | 100d | 0d |  |  |
| A1810 |  | P.c&R.c footing | 14d | 2012-11-10 | 2012-11-23 | A1800 | 100d | 0d | CARPENTER [50 h]; STEEL LABOUR [50 h] | conc |
| A1820 |  | R.c columns | 10d | 2012-11-24 | 2012-12-03 | A1810 | 100d | 0d | CARPENTER [50 h]; STEEL LABOUR [50 h] | conc |
| A1830 |  | Ground floor slab | 14d | 2012-12-04 | 2012-12-17 | A1820 | 100d | 0d | CARPENTER [10 h]; STEEL LABOUR [10 h] | conc |
| A1860 |  | First floor columns | 7d | 2012-12-18 | 2012-12-24 | A1830 | 100d | 0d | CARPENTER [50 h]; STEEL LABOUR [56 h] | conc |
| A1870 |  | First floor slab | 14d | 2012-12-25 | 2013-01-07 | A1860 | 100d | 0d | CARPENTER [10 h]; STEEL LABOUR [10 h] | conc |
|  | 2 | **ARCH SCOPE** |  | 2013-01-22 | 2013-03-09 |  |  |  |  |  |
| A1840 |  | masonry works | 20d | 2013-01-22 | 2013-02-10 | A1870 FS+14d | 100d | 0d | Brickwork Labor [136 h] |  |
| A2770 |  | Plaster works | 10d | 2013-02-11 | 2013-02-20 | A1840 | 100d | 0d | finishes worker [50 h] |  |
| A2780 |  | Flooring works | 10d | 2013-02-21 | 2013-03-02 | A2770 | 100d | 0d | finishes worker [50 h] |  |
| A2790 |  | Doors&windows erection | 2d | 2013-03-03 | 2013-03-04 | A2780 | 104d | 0d | finishes worker [10 h] |  |
| A2810 |  | Painting works | 5d | 2013-03-05 | 2013-03-09 | A2790 | 104d | 0d | finishes worker [25 h] |  |
|  | 3 | **ELECTRICAL SCOPE** |  | 2013-02-11 | 2013-03-22 |  |  |  |  |  |
| A5030 |  | Conduits&outlets | 20d | 2013-02-11 | 2013-03-02 | A2770 SS, A2770 FF | 120d |  |  |  |
| A5090 |  | Grounding&bonding | 5d | 2013-02-11 | 2013-02-15 | A5110 SS | 135d |  |  |  |
| A5040 |  | Cable trays | 20d | 2013-03-03 | 2013-03-22 | A2780 | 100d |  |  |  |
| A5050 |  | Telecommunications system & outlets | 8d | 2013-03-03 | 2013-03-10 | A5080 FF | 112d |  |  |  |
| A5060 |  | Fire alarm system | 10d | 2013-03-03 | 2013-03-12 | A2780 | 110d |  |  |  |
| A5080 |  | Lighting & power panels | 8d | 2013-03-03 | 2013-03-10 | A2780 | 112d | 0d |  |  |
| A5070 |  | Wires&cables | 14d | 2013-03-05 | 2013-03-18 | A2810 SS | 104d |  |  |  |
| A5100 |  | Equipment installation | 7d | 2013-03-10 | 2013-03-16 | A2810 | 106d |  |  |  |

| ID | WBS | Activity | Type | Duration | Start | Finish | Predecessors | Total float | Free float | Resources | Cost | concrete work |
| --- | --- | --- | --- | --- | --- | --- | --- | --- | --- | --- | --- | --- |
|  | 4 | **MECHANICAL SCOPE** |  |  | 2013-02-11 | 2013-03-11 |  |  |  |  |  |  |
|  | 2 | **PLUMBING WORKS** |  |  | 2013-02-11 | 2013-03-11 |  |  |  |  |  |  |
| A5110 |  | Plumbing works(first fix) |  | 2d | 2013-02-11 | 2013-02-12 | A1840 | 135d | 0d | MEP WORKER |  |  |
| A5120 |  | Plumbing works(second fix) |  | 2d | 2013-03-10 | 2013-03-11 | A2810 | 111d |  |  |  |  |
|  | 1 | **HVAC WORKS** |  |  | 2013-02-21 | 2013-03-11 |  |  |  |  |  |  |
| A5760 |  | Duct work |  | 2d | 2013-02-21 | 2013-02-22 | A2770 | 128d |  |  |  |  |
| A5750 |  | Split units |  | 2d | 2013-03-10 | 2013-03-11 | A2810 | 111d |  |  |  |  |
|  | 2 | **Steel building** |  |  | 2012-08-20 | 2012-11-13 |  |  |  |  |  |  |
| b10 |  | Excavation |  | 5d | 2012-08-20 | 2012-08-24 | A1060 | 229d | 0d |  |  |  |
| b20 |  | P.c&R.c footing |  | 10d | 2012-08-25 | 2012-09-03 | b10 | 229d | 0d | CARPENTER [80 h]; STEEL LABOUR [80 h] |  | conc |
| b30 |  | R.c pedestals |  | 7d | 2012-09-04 | 2012-09-10 | b20 | 229d | 0d | CARPENTER [80 h]; STEEL LABOUR [56 h] |  | conc |
| b40 |  | Masonry under slab on grade |  | 20d | 2012-09-11 | 2012-09-30 | b30 | 229d | 0d |  |  |  |
| b50 |  | Footing insulation |  | 7d | 2012-10-01 | 2012-10-07 | b40 | 229d | 0d |  |  |  |
| b60 |  | Backfilling |  | 7d | 2012-10-08 | 2012-10-14 | b50 | 229d | 0d |  |  |  |
| b70 |  | Steel structure erection |  | 15d | 2012-10-15 | 2012-10-29 | b60 | 229d | 0d |  |  |  |
| b80 |  | Slab on grade |  | 5d | 2012-10-30 | 2012-11-03 | b70 | 229d | 0d |  |  |  |
| b90 |  | Corrugated sheets installation |  | 10d | 2012-11-04 | 2012-11-13 | b80 | 229d |  |  |  |  |
|  | 15 | **FIRE FIGHTING** |  |  | 2012-08-20 | 2012-12-15 |  |  |  |  |  |  |
|  | 1 | **Concrete building** |  |  | 2012-08-20 | 2012-12-15 |  |  |  |  |  |  |
|  | 1 | **CIVIL SCOPE** |  |  | 2012-08-20 | 2012-12-15 |  |  |  |  |  |  |
| A1880 |  | Excavation |  | 5d | 2012-08-20 | 2012-08-24 | A1060 | 197d | 0d |  |  |  |
| A7160 |  | cash | level of effort | 118d | 2012-08-20 | 2012-12-15 | A1880 SS | 197d | 0d |  | 104 |  |
| A1890 |  | P.c&R.c footing |  | 10d | 2012-08-25 | 2012-09-03 | A1880 | 197d | 0d | CARPENTER [80 h]; STEEL LABOUR [80 h] |  | conc |
| A1900 |  | R.c columns |  | 7d | 2012-09-04 | 2012-09-10 | A1890 | 197d | 0d | CARPENTER [80 h]; STEEL LABOUR [56 h] |  | conc |
| A1910 |  | Ground floor slab |  | 14d | 2012-09-11 | 2012-09-24 | A1900 | 197d | 0d | CARPENTER [100 h]; STEEL LABOUR [100 h] |  | conc |

Notes:
- A7160: Expenses: (New Expense Item) 104

| ID | WBS | Activity | Duration | Start | Finish | Predecessors | Total float | Free float | Resources |
| --- | --- | --- | --- | --- | --- | --- | --- | --- | --- |
|  | 2 | **ARCH SCOPE** |  | 2012-10-09 | 2012-11-25 |  |  |  |  |
| A1920 |  | masonry works | 15d | 2012-10-09 | 2012-10-23 | A1910 FS+14d | 197d | 0d | Brickwork Labor [80 h] |
| A1930 |  | finishing works | 30d | 2012-10-24 | 2012-11-22 | A1920 | 220d |  |  |
| A2820 |  | Plaster works | 10d | 2012-10-24 | 2012-11-02 | A1920 | 197d | 0d | finishes worker [50 h] |
| A2830 |  | Flooring works | 7d | 2012-11-03 | 2012-11-09 | A2820 | 197d | 0d | finishes worker [35 h] |
| A2840 |  | Doors&windows erection | 2d | 2012-11-10 | 2012-11-11 | A2830 | 197d | 0d | finishes worker [10 h] |
| A2850 |  | False ceiling | 7d | 2012-11-12 | 2012-11-18 | A2840 | 197d | 0d | finishes worker [35 h] |
| A2860 |  | Painting works | 7d | 2012-11-19 | 2012-11-25 | A2850 | 197d | 0d | finishes worker [35 h] |
|  | 3 | **ELECTRICAL SCOPE** |  | 2012-10-24 | 2012-12-15 |  |  |  |  |
| A4830 |  | Conduits&outlets | 30d | 2012-10-24 | 2012-11-22 | A2820 SS, A2820 FF | 220d |  |  |
| A4890 |  | Grounding&bonding | 5d | 2012-10-24 | 2012-10-28 | A4910 SS | 245d |  |  |
| A4840 |  | Cable trays | 20d | 2012-11-19 | 2012-12-08 | A2850 | 204d |  |  |
| A4850 |  | Telecommunications system & outlets | 8d | 2012-11-19 | 2012-11-26 | A4880 FF | 216d |  |  |
| A4860 |  | Fire alarm system | 10d | 2012-11-19 | 2012-11-28 | A2850 | 214d |  |  |
| A4880 |  | Lighting & power panels | 8d | 2012-11-19 | 2012-11-26 | A2850 | 216d | 0d |  |
| A4870 |  | Wires&cables | 20d | 2012-11-26 | 2012-12-15 | A2860, A7160 FF | 197d |  |  |
| A4900 |  | Equipment installation | 7d | 2012-11-26 | 2012-12-02 | A2860 | 210d |  |  |
|  | 4 | **MECHANICAL SCOPE** |  | 2012-10-24 | 2012-11-29 |  |  |  |  |
|  | 2 | **PLUMBING WORKS** |  | 2012-10-24 | 2012-11-29 |  |  |  |  |
| A4910 |  | Plumbing works(first fix) | 4d | 2012-10-24 | 2012-10-27 | A1920 | 245d | 0d | MEP WORKER |
| A4920 |  | Plumbing works(second fix) | 4d | 2012-11-26 | 2012-11-29 | A2860 | 213d |  |  |
|  | 1 | **HVAC WORKS** |  | 2012-11-03 | 2012-11-27 |  |  |  |  |
| A5710 |  | Duct work | 2d | 2012-11-03 | 2012-11-04 | A2820 | 238d |  |  |
| A5700 |  | Air handling unit | 2d | 2012-11-26 | 2012-11-27 | A2860 | 215d |  |  |

| ID | WBS | Activity | Type | Duration | Start | Finish | Predecessors | Total float | Free float | Resources | Cost | concrete work |
| --- | --- | --- | --- | --- | --- | --- | --- | --- | --- | --- | --- | --- |
|  | 2 | **Steel building** |  |  | 2012-08-20 | 2012-10-19 |  |  |  |  |  |  |
| c10 |  | Excavation |  | 5d | 2012-08-20 | 2012-08-24 | A1060 | 254d | 0d |  |  |  |
| c110 |  | P.c&R.c footing |  | 10d | 2012-08-25 | 2012-09-03 | c10, c10 FF | 254d | 0d | CARPENTER [80 h]; STEEL LABOUR [80 h] |  | conc |
| c210 |  | R.c pedestals |  | 7d | 2012-09-04 | 2012-09-10 | c110 | 254d | 0d | CARPENTER [80 h]; STEEL LABOUR [56 h] |  | conc |
| c310 |  | Steel structure erection |  | 15d | 2012-09-11 | 2012-09-25 | c210 | 259d | 0d |  |  |  |
| c810 |  | Masonry under slab on grade |  | 20d | 2012-09-11 | 2012-09-30 | c210 | 254d | 0d |  |  |  |
| c410 |  | Corrugated sheets installation |  | 10d | 2012-09-26 | 2012-10-05 | c310 | 268d |  |  |  |  |
| c510 |  | Footing insulation |  | 7d | 2012-10-01 | 2012-10-07 | c310, c810 | 254d | 0d |  |  |  |
| c610 |  | Backfilling |  | 7d | 2012-10-08 | 2012-10-14 | c510 | 254d | 0d |  |  |  |
| c710 |  | Slab on grade |  | 5d | 2012-10-15 | 2012-10-19 | c610 | 254d |  |  |  |  |
|  | 16 | **MOSQUE** |  |  | 2012-08-20 | 2013-01-22 |  |  |  |  |  |  |
|  | 1 | **Minaret building** |  |  | 2012-08-20 | 2013-01-22 |  |  |  |  |  |  |
| A7170 |  | cash | level of effort | 149d | 2012-08-20 | 2013-01-15 | A1940 SS | 166d | 0d |  | 69 |  |
| A2050 |  | P.c&R.c footings |  | 14d | 2012-08-27 | 2012-09-09 | A1940 | 159d | 0d | CARPENTER [30 h]; STEEL LABOUR [30 h] |  | conc |
| A2060 |  | R.c walls |  | 90d | 2012-09-10 | 2012-12-08 | A2050 | 159d | 0d | CARPENTER [30 h] |  |  |
| A2920 |  | External plaster |  | 30d | 2012-12-09 | 2013-01-07 | A2060, A1060 | 159d | 0d |  |  |  |
| A2930 |  | Painting works |  | 15d | 2013-01-08 | 2013-01-22 | A2920 | 159d |  | finishes worker [75 h] |  |  |
|  | 2 | **Prayer building** |  |  | 2012-08-20 | 2013-01-15 |  |  |  |  |  |  |
|  | 1 | **CIVIL SCOPE** |  |  | 2012-08-20 | 2012-09-30 |  |  |  |  |  |  |
| A1940 |  | Excavation |  | 7d | 2012-08-20 | 2012-08-26 | A1060 | 159d | 0d |  |  |  |
| A1950 |  | P.c&R.c footing |  | 14d | 2012-08-27 | 2012-09-09 | A1940 | 166d | 0d | CARPENTER [30 h]; STEEL LABOUR [30 h] |  | conc |
| A1960 |  | R.c columns |  | 7d | 2012-09-10 | 2012-09-16 | A1950 | 166d | 0d | CARPENTER [30 h]; STEEL LABOUR [30 h] |  | conc |
| A1970 |  | Ground floor slab |  | 14d | 2012-09-17 | 2012-09-30 | A1960 | 166d | 0d | CARPENTER [80 h]; STEEL LABOUR [80 h] |  | conc |
|  | 2 | **ARCH SCOPE** |  |  | 2012-10-16 | 2012-12-31 |  |  |  |  |  |  |
| A1980 |  | masonry works |  | 20d | 2012-10-16 | 2012-11-04 | A1970 FS+15d | 166d | 0d | Brickwork Labor [160 h] |  |  |
| A2870 |  | Plaster works |  | 20d | 2012-11-05 | 2012-11-24 | A1980 | 166d | 0d | finishes worker [100 h] |  |  |
| A2880 |  | Flooring works |  | 10d | 2012-11-25 | 2012-12-04 | A2870 | 166d | 0d | finishes worker [50 h] |  |  |
| A2890 |  | Doors&windows erection |  | 7d | 2012-12-05 | 2012-12-11 | A2880 | 166d | 0d | finishes worker [35 h] |  |  |
| A2910 |  | Painting works |  | 20d | 2012-12-12 | 2012-12-31 | A2890 | 166d | 0d | finishes worker [100 h] |  |  |

Notes:
- A7170: Expenses: (New Expense Item) 69

| ID | WBS | Activity | Type | Duration | Start | Finish | Predecessors | Total float | Free float | Resources | Cost |
| --- | --- | --- | --- | --- | --- | --- | --- | --- | --- | --- | --- |
|  | 3 | **ELECTRICAL SCOPE** |  |  | 2012-11-05 | 2013-01-15 |  |  |  |  |  |
| A4590 |  | Grounding&bonding |  | 5d | 2012-11-05 | 2012-11-09 | A4610 SS | 233d |  |  |  |
| A4530 |  | Conduits&outlets |  | 15d | 2012-11-25 | 2012-12-09 | A2870 | 203d |  |  |  |
| A4540 |  | Cable trays |  | 8d | 2012-11-25 | 2012-12-02 | A2870 | 210d |  |  |  |
| A4550 |  | Telecommunications system & outlets |  | 8d | 2012-12-05 | 2012-12-12 | A4580 FF | 200d |  |  |  |
| A4580 |  | Lighting & power panels |  | 8d | 2012-12-05 | 2012-12-12 | A2880 | 200d | 0d |  |  |
| A4560 |  | Fire alarm system |  | 7d | 2013-01-01 | 2013-01-07 | A2910 | 174d |  |  |  |
| A4570 |  | Wires&cables |  | 15d | 2013-01-01 | 2013-01-15 | A2910, A7170 FF | 166d |  |  |  |
| A4600 |  | Equipment installation |  | 7d | 2013-01-01 | 2013-01-07 | A2910 | 174d |  |  |  |
|  | 4 | **MECHANICAL SCOPE** |  |  | 2012-11-05 | 2013-01-07 |  |  |  |  |  |
|  | 2 | **PLUMBING WORKS** |  |  | 2012-11-05 | 2013-01-07 |  |  |  |  |  |
| A4610 |  | Plumbing works(first fix) |  | 7d | 2012-11-05 | 2012-11-11 | A1980 | 231d | 0d | MEP WORKER |  |
| A4620 |  | Plumbing works(second fix) |  | 7d | 2013-01-01 | 2013-01-07 | A2910 | 174d |  |  |  |
|  | 1 | **HVAC WORKS** |  |  | 2013-01-01 | 2013-01-02 |  |  |  |  |  |
| A5770 |  | Split units |  | 2d | 2013-01-01 | 2013-01-02 | A2910 | 179d |  |  |  |
|  | PRECOMMISSIONING | **PRECOMMISSIONING & AS-BUILT** |  |  | 2013-05-16 | 2013-06-30 |  |  |  |  |  |
| A7700 |  | Electrical part | milestone | 0d | 2013-05-16 | 2013-05-16 | A1060 FS+270d | 45d |  |  | 259 |
| A7720 |  | HVAC system | milestone | 0d | 2013-05-21 | 2013-05-21 | A1060 FS+275d | 40d |  |  | 225 |
| A7710 |  | Instrumentation& telecommunication | milestone | 0d | 2013-05-26 | 2013-05-26 | A1060 FS+280d | 35d |  |  | 300 |
| A7730 |  | Utilities & connections | milestone | 0d | 2013-05-31 | 2013-05-31 | A1060 FS+285d | 30d |  |  | 217 |
| A7740 |  | Start up | milestone | 0d | 2013-06-15 | 2013-06-15 | A1060 FS+300d | 15d |  |  | 225 |
| A7750 |  | Hydro testing of piping &testing of equipment | milestone | 0d | 2013-06-30 | 2013-06-30 | A1060 FS+315d | 0d |  |  | 350 |

Notes:
- A7700: Expenses: (New Expense Item) 200; (New Expense Item)1 59
- A7720: Expenses: (New Expense Item) 225
- A7710: Expenses: (New Expense Item) 300
- A7730: Expenses: (New Expense Item) 200; (New Expense Item)1 17
- A7740: Expenses: (New Expense Item) 225
- A7750: Expenses: (New Expense Item) 350
