# Office Building 14B01 Substructure Package

Schedule from Primavera P6, 2010-07-01 to 2010-10-18, data date 2010-07-01, A marks actual dates.

## Calendars

- Gama projects calender: Mon-Thu 08:00-16:00; Fri off; Sat-Sun 08:00-16:00.

## Resources

| Resource | Group |
| --- | --- |
| labour | labor |

## Schedule

| ID | WBS | Activity | Type | Duration | Start | Finish | Predecessors | Complete | Planned start | Planned finish | Total float | Free float |
| --- | --- | --- | --- | --- | --- | --- | --- | --- | --- | --- | --- | --- |
|  | 1 | **General** |  |  | 2010-07-01 | 2010-10-18 |  |  |  |  |  |  |
| A1000 |  | Start project | milestone | 0d | 2010-07-01 | 2010-07-01 |  |  |  |  | 0d |  |
| A1320 |  | Receive issue for construction drawings | milestone | 0d | 2010-07-01 | 2010-07-01 | A1000 |  |  |  | 0d |  |
| A1020 |  | Mobilization |  | 20d | 2010-07-12 A | 2010-07-20 A | A1000 | 100% | 2010-07-01 | 2010-07-24 |  |  |
| A1010 |  | Finish project | milestone | 0d | 2010-10-18 | 2010-10-18 | A1590 |  |  |  | 0d |  |
|  | 2 | **Engineering** |  |  | 2010-07-01 | 2010-08-18 |  |  |  |  |  |  |
|  | 1 | **Part 1** |  |  | 2010-07-01 | 2010-08-08 |  |  |  |  |  |  |
| A1140 |  | Submittal of basement slab concrete dimension | milestone | 0d | 2010-07-01 | 2010-07-01 | A1000, A1320 |  |  |  | 0d |  |
| A1150 |  | Submittal of column layout | milestone | 0d | 2010-07-01 | 2010-07-01 | A1000, A1320 |  |  |  | 10d | 0d |
| A1141 |  | Approval of basement slab concrete dimension | milestone | 0d | 2010-07-04 | 2010-07-04 | A1140 FS+3d |  |  |  | 0d |  |
| A1151 |  | Approval of column layout | milestone | 0d | 2010-07-04 | 2010-07-04 | A1150 FS+3d |  |  |  | 10d |  |
| A1160 |  | Submittal of basement slab RFT&starters | milestone | 0d | 2010-07-12 | 2010-07-12 | A1000 FS+9d, A1320 |  |  |  | 9d | 0d |
| A1161 |  | Approval of basement slab RFT&starters | milestone | 0d | 2010-07-14 | 2010-07-14 | A1160 FS+3d |  |  |  | 9d |  |
| A1170 |  | Submittal of vertical element RFT | milestone | 0d | 2010-07-22 | 2010-07-22 | A1000 FS+18d, A1320 |  |  |  | 13d | 0d |
| A1171 |  | Approval of vertical element RFT | milestone | 0d | 2010-07-25 | 2010-07-25 | A1170 FS+3d |  |  |  | 13d |  |
| A1180 |  | Submittal of ground floor slab concrete dimension | milestone | 0d | 2010-07-29 | 2010-07-29 | A1000 FS+24d, A1320 |  |  |  | 14d | 0d |
| A1181 |  | Approval of ground floor slab concrete dimension | milestone | 0d | 2010-08-01 | 2010-08-01 | A1180 FS+3d |  |  |  | 14d |  |
| A1190 |  | Submittal of ground floor slab RFT | milestone | 0d | 2010-08-05 | 2010-08-05 | A1000 FS+30d, A1320 |  |  |  | 14d | 0d |
| A1191 |  | Approval of ground floor slab RFT | milestone | 0d | 2010-08-08 | 2010-08-08 | A1190 FS+3d |  |  |  | 14d |  |
|  | 2 | **Part 2** |  |  | 2010-07-12 | 2010-08-18 |  |  |  |  |  |  |
| A1200 |  | Submittal of basement slab concrete dimension | milestone | 0d | 2010-07-12 | 2010-07-12 | A1000 FS+9d, A1320 |  |  |  | 31d | 0d |
| A1210 |  | Submittal of column layout | milestone | 0d | 2010-07-12 | 2010-07-12 | A1000 FS+9d, A1320 |  |  |  | 18d | 0d |
| A1201 |  | Approval of basement slab concrete dimension | milestone | 0d | 2010-07-14 | 2010-07-14 | A1200 FS+3d |  |  |  | 31d | 30d |
| A1211 |  | Approval of column layout | milestone | 0d | 2010-07-14 | 2010-07-14 | A1210 FS+3d |  |  |  | 18d |  |
| A1220 |  | Submittal of basement slab RFT&starters | milestone | 0d | 2010-07-22 | 2010-07-22 | A1000 FS+18d, A1320 |  |  |  | 13d | 0d |
| A1221 |  | Approval of basement slab RFT&starters | milestone | 0d | 2010-07-25 | 2010-07-25 | A1220 FS+3d |  |  |  | 13d |  |
| A1230 |  | Submittal of vertical element RFT | milestone | 0d | 2010-07-29 | 2010-07-29 | A1000 FS+24d, A1320 |  |  |  | 7d | 0d |
| A1231 |  | Approval of vertical element RFT | milestone | 0d | 2010-08-01 | 2010-08-01 | A1230 FS+3d |  |  |  | 7d |  |
| A1240 |  | Submittal of ground floor slab concrete dimension | milestone | 0d | 2010-08-05 | 2010-08-05 | A1000 FS+30d, A1320 |  |  |  | 32d | 0d |
| A1241 |  | Approval of ground floor slab concrete dimension | milestone | 0d | 2010-08-08 | 2010-08-08 | A1240 FS+3d |  |  |  | 32d |  |
| A1250 |  | Submittal of ground floor slab RFT | milestone | 0d | 2010-08-16 | 2010-08-16 | A1000 FS+39d, A1320 |  |  |  | 31d | 0d |
| A1251 |  | Approval of ground floor slab RFT | milestone | 0d | 2010-08-18 | 2010-08-18 | A1250 FS+3d |  |  |  | 31d |  |

| ID | WBS | Activity | Type | Duration | Start | Finish | Predecessors | Total float | Free float | Resources | location | type of work | detailed work |
| --- | --- | --- | --- | --- | --- | --- | --- | --- | --- | --- | --- | --- | --- |
|  | 3 | **Tank** |  |  | 2010-07-08 | 2010-07-11 |  |  |  |  |  |  |  |
| A1260 |  | submittals of tank's shop drawings | milestone | 0d | 2010-07-08 | 2010-07-08 | A1000 FS+6d, A1320 | 11d | 0d |  |  |  |  |
| A2170 |  | Approval of tank's shop drawings | milestone | 0d | 2010-07-11 | 2010-07-11 | A1260 FS+3d | 11d | 0d |  |  |  |  |
|  | 3 | **construction** |  |  | 2010-07-12 | 2010-10-18 |  |  |  |  |  |  |  |
| A1580 |  | Start construction | milestone | 0d | 2010-07-12 | 2010-07-12 | A1141 FS+6d | 0d |  |  |  |  |  |
| A1590 |  | Finish construction | milestone | 0d | 2010-10-18 | 2010-10-18 | A1480, A1063, A1330, A2030, A1730, A1880, A2160, A1062, A1680, A2190, A2180, A2200, A2210 | 0d |  |  |  |  |  |
|  | OFC | **Office building** |  |  | 2010-07-17 | 2010-10-18 |  |  |  |  |  |  |  |
|  | P1 | **Part1** |  |  | 2010-07-17 | 2010-10-16 |  |  |  |  |  |  |  |
|  | A1 | **Area 1** |  |  | 2010-07-25 | 2010-10-12 |  |  |  |  |  |  |  |
| A1269 |  | Cable ducts fixing |  | 2d | 2010-07-25 | 2010-07-26 | A1580 FS+11d | 3d | 0d |  |  |  |  |
| A1268 |  | Plain concrete foundation |  | 6d | 2010-07-27 | 2010-08-02 | A1269 | 3d | 2d |  |  |  |  |
| A1270 |  | Formwork For R.C raft |  | 6d | 2010-08-05 | 2010-08-11 | A1141, A1151, A1268, A1460 FS+4d | 1d | 0d | labour [96 h] | 01 | 02 | 02 |
| A1279 |  | hammock for raft | level of effort | 12d | 2010-08-05 | 2010-08-18 | A1270 SS | 1d | 0d |  |  |  |  |
| A1280 |  | Rebar For R.C raft |  | 4d | 2010-08-12 | 2010-08-16 | A1270, A1161 | 1d | 0d | labour [880 h] | 01 | 02 | 02 |
| A1290 |  | M&E conduits For R.C raft (by others) | milestone | 0d | 2010-08-14 | 2010-08-14 | A1280 FS-3d | 3d | 2d |  | 01 | 05 |  |
| A1300 |  | Pouring For R.C raft |  | 1d | 2010-08-17 | 2010-08-17 | A1280, A1290 FS+1d, A1279 FF-1d | 1d | 0d | labour [56 h] | 01 | 02 | 02 |
| A1289 |  | hammock for basement columns & walls | level of effort | 10d | 2010-08-19 | 2010-08-30 | A1360 SS | 7d | 0d |  |  |  |  |
| A1360 |  | Formwork For basement walls & col. |  | 8d | 2010-08-19 | 2010-08-28 | A1300 FS+1d | 7d | 0d | labour [480 h] | 01 | 02 | 03 |
| A1370 |  | Rebar For basement walls & col. |  | 4d | 2010-08-22 | 2010-08-25 | A1360 SS+2d, A1171, A1231 | 9d | 2d | labour [480 h] | 01 | 02 | 03 |
| A1380 |  | Pouring For basement walls & col. |  | 1d | 2010-08-29 | 2010-08-29 | A1370, A1360, A1289 FF-1d | 7d | 0d | labour [32 h] | 01 | 02 | 03 |
| A1340 |  | Water proofing membrane |  | 4d | 2010-08-31 | 2010-09-04 | A1380 FS+1d | 16d | 0d | labour [320 h] | 01 | 04 |  |
| A1310 |  | Isolation For Foundation |  | 4d | 2010-09-01 | 2010-09-05 | A1380 FS+2d | 19d | 3d | labour [80 h] | 01 | 04 |  |
| A1350 |  | Water proofing protection layer |  | 4d | 2010-09-05 | 2010-09-08 | A1340 | 16d | 0d |  | 01 | 04 |  |
| A1299 |  | hammock for ground floorslab | level of effort | 16d | 2010-09-08 | 2010-09-26 | A1390 SS | 0d |  |  |  |  |  |
| A1390 |  | Formwork For Ground Floor Slab |  | 6d | 2010-09-08 | 2010-09-14 | A1181, A1570 FS+8d, A1380 FS+1d | 0d |  | labour [960 h] | 01 | 02 | 04 |
| A1400 |  | Rebar For Ground Floor Slab |  | 3d | 2010-09-13 | 2010-09-15 | A1390 FS-2d, A1191 | 0d |  | labour [360 h] | 01 | 02 | 04 |
| A1410 |  | M&E conduits For Ground Floor Slab (by others) | milestone | 0d | 2010-09-14 | 2010-09-14 | A1400 FS-2d | 1d |  |  | 01 | 05 |  |
| A1420 |  | Pouring For Ground Floor Slab |  | 1d | 2010-09-16 | 2010-09-16 | A1400, A1410 FS+1d, A1299 FF-8d | 0d |  | labour [32 h] | 01 | 02 | 04 |
| A2180 |  | Backfilling Around Foundation |  | 8d | 2010-09-21 | 2010-09-29 | A1350 FS+10d, A1310 FS+10d | 16d |  | labour [24 h] | 01 | 01 |  |
| A1330 |  | Masonry works |  | 7d | 2010-10-05 | 2010-10-12 | A1420 FS+15d | 5d |  | labour [560 h] | 01 | 03 |  |

| ID | WBS | Activity | Type | Duration | Start | Finish | Predecessors | Total float | Free float | Resources | location | type of work | detailed work |
| --- | --- | --- | --- | --- | --- | --- | --- | --- | --- | --- | --- | --- | --- |
|  | A2 | **Area 2** |  |  | 2010-07-17 | 2010-10-14 |  |  |  |  |  |  |  |
| A1030 |  | Formwork For R.C raft |  | 8d | 2010-07-17 | 2010-07-25 | A1141, A1151, A1580 FS+4d | 0d |  | labour [288 h] | 01 | 02 | 02 |
| A2220 |  | hammock for raft | level of effort | 17d | 2010-07-17 | 2010-08-04 | A1030 SS | 0d |  |  |  |  |  |
| A1040 |  | Rebar For R.C raft |  | 6d | 2010-07-26 | 2010-08-01 | A1030, A1161 | 0d |  | labour [2640 h] | 01 | 02 | 02 |
| A1050 |  | M&E conduits For R.C raft (by others) | milestone | 0d | 2010-07-31 | 2010-07-31 | A1040 FS-2d | 1d |  |  | 01 | 05 |  |
| A1060 |  | Pouring For R.C raft |  | 2d | 2010-08-02 | 2010-08-03 | A1040, A1050 FS+1d, A2220 FF-1d | 0d |  | labour [168 h] | 01 | 02 | 02 |
| A1070 |  | Formwork For basement walls & col. |  | 8d | 2010-08-08 | 2010-08-16 | A1060 FS+3d | 0d |  | labour [1440 h] | 01 | 02 | 03 |
| A2230 |  | hammock for basement columns & walls | level of effort | 10d | 2010-08-08 | 2010-08-18 | A1070 SS | 0d |  |  |  |  |  |
| A1080 |  | Rebar For basement walls & col. |  | 6d | 2010-08-10 | 2010-08-16 | A1070 SS+2d, A1171, A1231 | 0d |  | labour [1440 h] | 01 | 02 | 03 |
| A1090 |  | Pouring For basement walls & col. |  | 1d | 2010-08-17 | 2010-08-17 | A1080, A1070, A2230 FF-1d | 0d |  | labour [96 h] | 01 | 04 | 03 |
| A1064 |  | Water proofing membrane |  | 6d | 2010-08-19 | 2010-08-25 | A1090 FS+1d | 9d | 0d | labour [720 h] | 01 | 04 |  |
| A1100 |  | Formwork For Ground Floor Slab |  | 10d | 2010-08-19 | 2010-08-30 | A1181, A1090 FS+1d | 0d |  | labour [2880 h] | 01 | 02 | 04 |
| A2240 |  | hammock for ground floorslab | level of effort | 23d | 2010-08-19 | 2010-09-14 | A1100 SS | 0d |  |  |  |  |  |
| A1061 |  | Isolation For Foundation |  | 6d | 2010-08-21 | 2010-08-26 | A1090 FS+2d | 14d | 5d | labour [240 h] | 01 | 04 |  |
| A1065 |  | Water proofing protection layer |  | 6d | 2010-08-26 | 2010-09-01 | A1064 | 9d | 0d |  | 01 | 04 |  |
| A1110 |  | Rebar For Ground Floor Slab |  | 6d | 2010-08-29 | 2010-09-04 | A1100 FS-2d, A1191 | 0d |  | labour [1080 h] | 01 | 02 | 04 |
| A1120 |  | M&E conduits For Ground Floor Slab (by others) | milestone | 0d | 2010-09-02 | 2010-09-02 | A1110 FS-2d | 1d |  |  | 01 | 05 |  |
| A1130 |  | Pouring For Ground Floor Slab |  | 1d | 2010-09-05 | 2010-09-05 | A1110, A1120 FS+1d, A2240 FF-8d | 0d |  | labour [96 h] | 01 | 02 | 04 |
| A1062 |  | Backfilling Around Foundation |  | 8d | 2010-09-29 | 2010-10-07 | A1061 FS+23d, A1065 FS+23d | 9d |  | labour [72 h] | 01 | 01 |  |
| A1063 |  | Masonry works |  | 9d | 2010-10-05 | 2010-10-14 | A1130 FS+25d | 3d |  | labour [1680 h] | 01 | 03 |  |
|  | A3 | **Area 3** |  |  | 2010-07-21 | 2010-10-16 |  |  |  |  |  |  |  |
| A1430 |  | Formwork For R.C raft |  | 6d | 2010-07-21 | 2010-07-27 | A1141, A1151, A1580 FS+8d | 0d |  | labour [96 h] | 01 | 02 | 02 |
| A2250 |  | hammock for raft | level of effort | 10d | 2010-07-21 | 2010-08-01 | A1430 SS | 0d |  |  |  |  |  |
| A1440 |  | Rebar For R.C raft |  | 4d | 2010-07-26 | 2010-07-29 | A1430 FF+2d, A1161 | 0d |  | labour [880 h] | 01 | 02 | 02 |
| A1450 |  | M&E conduits For R.C raft (by others) | milestone | 0d | 2010-07-28 | 2010-07-28 | A1440 FS-2d | 1d |  |  | 01 | 05 |  |
| A1460 |  | Pouring For R.C raft |  | 1d | 2010-07-31 | 2010-07-31 | A1440, A1450 FS+1d, A2250 FF-1d | 0d |  | labour [56 h] | 01 | 02 | 02 |
| A1510 |  | Formwork For basement walls & col. |  | 6d | 2010-08-08 | 2010-08-14 | A1460 FS+6d | 0d |  | labour [480 h] | 01 | 02 | 03 |
| A2260 |  | hammock for basement columns & walls | level of effort | 9d | 2010-08-08 | 2010-08-17 | A1510 SS | 0d |  |  |  |  |  |
| A1520 |  | Rebar For basement walls & col. |  | 4d | 2010-08-11 | 2010-08-15 | A1510 SS+3d, A1171, A1231 | 0d |  | labour [480 h] | 01 | 02 | 03 |
| A1530 |  | Pouring For basement walls & col. |  | 1d | 2010-08-16 | 2010-08-16 | A1510, A1520, A2260 FF-1d | 0d |  | labour [32 h] | 01 | 02 | 03 |
| A1490 |  | Water proofing membrane |  | 6d | 2010-08-18 | 2010-08-24 | A1530 FS+1d | 2d | 0d | labour [240 h] | 01 | 04 |  |
| A1540 |  | Formwork For Ground Floor Slab |  | 8d | 2010-08-18 | 2010-08-26 | A1181, A1530 FS+1d | 0d |  | labour [960 h] | 01 | 02 | 04 |
| A2270 |  | hammock for ground floorslab | level of effort | 18d | 2010-08-18 | 2010-09-07 | A1540 SS | 0d |  |  |  |  |  |
| A1470 |  | Isolation For Foundation |  | 8d | 2010-08-21 | 2010-08-29 | A1530 FS+3d | 6d | 4d | labour [80 h] | 01 | 04 |  |
| A1500 |  | Water proofing protection layer |  | 8d | 2010-08-25 | 2010-09-02 | A1490 | 2d | 0d |  | 01 | 04 |  |
| A1550 |  | Rebar For Ground Floor Slab |  | 3d | 2010-08-25 | 2010-08-28 | A1540 FS-2d, A1191 | 0d |  | labour [360 h] | 01 | 02 | 04 |
| A1560 |  | M&E conduits For Ground Floor Slab (by others) | milestone | 0d | 2010-08-26 | 2010-08-26 | A1550 FS-2d | 1d |  |  | 01 | 05 |  |
| A1570 |  | Pouring For Ground Floor Slab |  | 1d | 2010-08-29 | 2010-08-29 | A1550, A1560 FS+1d, A2270 FF-8d | 0d |  | labour [32 h] | 01 | 02 | 04 |
| A1480 |  | Masonry works |  | 7d | 2010-10-03 | 2010-10-10 | A1570 FS+29d | 7d |  | labour [560 h] | 01 | 03 |  |
| A2190 |  | Backfilling Around Foundation |  | 12d | 2010-10-03 | 2010-10-16 | A1500 FS+25d, A1470 FS+25d | 2d |  | labour [24 h] | 01 | 01 |  |

| ID | WBS | Activity | Type | Duration | Start | Finish | Predecessors | Total float | Free float | Resources | location | type of work | detailed work |
| --- | --- | --- | --- | --- | --- | --- | --- | --- | --- | --- | --- | --- | --- |
|  | P2 | **Part 2** |  |  | 2010-08-05 | 2010-10-18 |  |  |  |  |  |  |  |
|  | A1 | **Area 1** |  |  | 2010-08-19 | 2010-10-18 |  |  |  |  |  |  |  |
| A1760 |  | Formwork For R.C raft |  | 6d | 2010-08-19 | 2010-08-25 | A1211, A1201, A1300 FS+1d | 1d | 0d | labour [96 h] | 02 | 02 | 02 |
| A2280 |  | hammock for raft | level of effort | 12d | 2010-08-19 | 2010-09-01 | A1760 SS | 1d | 0d |  |  |  |  |
| A1770 |  | Rebar For R.C raft |  | 4d | 2010-08-26 | 2010-08-30 | A1760, A1221 | 1d | 0d | labour [880 h] | 02 | 02 | 02 |
| A1780 |  | M&E conduits For R.C raft (by others) | milestone | 0d | 2010-08-29 | 2010-08-29 | A1770 FS-2d | 2d | 1d |  | 02 | 05 |  |
| A1790 |  | Pouring For R.C raft |  | 1d | 2010-08-31 | 2010-08-31 | A1770, A1780 FS+1d, A2280 FF-1d | 1d | 0d | labour [56 h] | 02 | 02 | 02 |
| A1800 |  | Formwork For basement walls & col. |  | 8d | 2010-09-02 | 2010-09-11 | A1790 FS+1d | 1d | 0d | labour [480 h] | 02 | 02 | 03 |
| A2290 |  | hammock for basement columns & walls | level of effort | 10d | 2010-09-02 | 2010-09-13 | A1800 SS | 1d | 0d |  |  |  |  |
| A1810 |  | Rebar For basement walls & col. |  | 4d | 2010-09-05 | 2010-09-08 | A1800 SS+2d | 3d | 2d | labour [480 h] | 02 | 02 | 03 |
| A1820 |  | Pouring For basement walls & col. |  | 1d | 2010-09-12 | 2010-09-12 | A1800, A1810, A2290 FF-1d | 1d | 0d | labour [32 h] | 02 | 02 | 03 |
| A1890 |  | Water proofing membrane |  | 4d | 2010-09-14 | 2010-09-18 | A1820 FS+1d | 2d | 0d | labour [240 h] | 02 | 04 |  |
| A1830 |  | Isolation For Foundation |  | 6d | 2010-09-16 | 2010-09-22 | A1820 FS+3d | 1d | 0d | labour [80 h] | 02 | 04 |  |
| A1900 |  | Water proofing protection layer |  | 3d | 2010-09-19 | 2010-09-21 | A1890 | 2d | 1d |  | 02 | 04 |  |
| A1840 |  | Formwork For Ground Floor Slab |  | 6d | 2010-09-27 | 2010-10-03 | A1241, A1820 FS+1d, A1420 FS+8d | 0d |  | labour [960 h] | 02 | 02 | 04 |
| A2300 |  | hammock for ground floorslab | level of effort | 16d | 2010-09-27 | 2010-10-14 | A1840 SS | 0d |  |  |  |  |  |
| A1850 |  | Rebar For Ground Floor Slab |  | 3d | 2010-10-02 | 2010-10-04 | A1840 FS-2d, A1251 | 0d |  | labour [360 h] | 02 | 02 | 04 |
| A1860 |  | M&E conduits For Ground Floor Slab (by others) | milestone | 0d | 2010-10-03 | 2010-10-03 | A1850 FS-2d | 1d |  |  | 02 | 05 |  |
| A2200 |  | Backfilling Around Foundation |  | 12d | 2010-10-04 | 2010-10-17 | A1900 FS+9d, A1830 FS+9d | 1d |  | labour [24 h] | 02 | 01 |  |
| A1870 |  | Pouring For Ground Floor Slab |  | 1d | 2010-10-05 | 2010-10-05 | A1850, A1860 FS+1d, A2300 FF-8d | 0d |  | labour [32 h] | 02 | 02 | 04 |
| A1880 |  | Masonry works |  | 3d | 2010-10-16 | 2010-10-18 | A1870 FS+8d | 0d |  | labour [560 h] | 02 | 03 |  |
|  | A2 | **Area 2** |  |  | 2010-08-05 | 2010-10-18 |  |  |  |  |  |  |  |
| A1600 |  | Formwork For R.C raft |  | 8d | 2010-08-05 | 2010-08-14 | A1211, A1060 FS+1d | 0d |  | labour [288 h] | 02 | 02 | 02 |
| A2310 |  | hammock for raft | level of effort | 13d | 2010-08-05 | 2010-08-19 | A1600 SS | 0d |  |  |  |  |  |
| A1610 |  | Rebar For R.C raft |  | 6d | 2010-08-10 | 2010-08-16 | A1221, A1600 FF+2d | 0d |  | labour [2640 h] | 02 | 02 | 02 |
| A1620 |  | M&E conduits For R.C raft (by others) | milestone | 0d | 2010-08-15 | 2010-08-15 | A1610 FS-2d | 1d |  |  | 02 | 05 |  |
| A1630 |  | Pouring For R.C raft |  | 2d | 2010-08-17 | 2010-08-18 | A1610, A1620 FS+1d, A2310 FF-1d | 0d |  | labour [168 h] | 02 | 02 | 02 |
| A1640 |  | Formwork For basement walls & col. |  | 10d | 2010-08-21 | 2010-08-31 | A1630 FS+1d | 2d | 0d | labour [1440 h] | 02 | 02 | 03 |
| A2320 |  | hammock for basement columns & walls | level of effort | 12d | 2010-08-21 | 2010-09-02 | A1640 SS | 2d | 0d |  |  |  |  |
| A1650 |  | Rebar For basement walls & col. |  | 8d | 2010-08-23 | 2010-08-31 | A1640 SS+2d | 2d | 0d | labour [1440 h] | 02 | 02 | 03 |
| A1660 |  | Pouring For basement walls & col. |  | 1d | 2010-09-01 | 2010-09-01 | A1640, A1650, A2320 FF-1d | 2d | 0d | labour [96 h] | 02 | 02 | 03 |
| A1740 |  | Water proofing membrane |  | 7d | 2010-09-04 | 2010-09-11 | A1660 FS+1d | 2d | 0d | labour [720 h] | 02 | 04 |  |
| A1670 |  | Isolation For Foundation |  | 8d | 2010-09-06 | 2010-09-14 | A1660 FS+3d | 5d | 3d | labour [240 h] | 02 | 04 |  |
| A1750 |  | Water proofing protection layer |  | 6d | 2010-09-12 | 2010-09-18 | A1740 | 2d | 0d |  | 02 | 04 |  |
| A1690 |  | Formwork For Ground Floor Slab |  | 10d | 2010-09-15 | 2010-09-26 | A1241, A1130 FS+8d, A1660 FS+1d | 0d |  | labour [2880 h] | 02 | 02 | 04 |
| A2330 |  | hammock for ground floorslab | level of effort | 23d | 2010-09-15 | 2010-10-11 | A1690 SS | 0d |  |  |  |  |  |
| A1700 |  | Rebar For Ground Floor Slab |  | 6d | 2010-09-25 | 2010-09-30 | A1690 FS-2d, A1251 | 0d |  | labour [1080 h] | 02 | 02 | 04 |
| A1710 |  | M&E conduits For Ground Floor Slab (by others) | milestone | 0d | 2010-09-29 | 2010-09-29 | A1700 FS-2d | 1d |  |  | 02 | 05 |  |
| A1720 |  | Pouring For Ground Floor Slab |  | 1d | 2010-10-02 | 2010-10-02 | A1700, A1710 FS+1d, A2330 FF-8d | 0d |  | labour [96 h] | 02 | 02 | 04 |
| A1680 |  | Backfilling Around Foundation |  | 10d | 2010-10-05 | 2010-10-16 | A1670 FS+14d, A1750 FS+14d | 2d |  | labour [72 h] | 02 | 01 |  |
| A1730 |  | Masonry works |  | 6d | 2010-10-12 | 2010-10-18 | A1720 FS+8d | 0d |  | labour [1680 h] | 02 | 03 |  |

| ID | WBS | Activity | Type | Duration | Start | Finish | Predecessors | Total float | Free float | Resources | location | type of work | detailed work |
| --- | --- | --- | --- | --- | --- | --- | --- | --- | --- | --- | --- | --- | --- |
|  | A3 | **Area 3** |  |  | 2010-08-21 | 2010-10-18 |  |  |  |  |  |  |  |
| A1910 |  | Formwork For R.C raft |  | 9d | 2010-08-21 | 2010-08-30 | A1211, A1630 FS+1d | 0d |  | labour [96 h] | 02 | 02 | 02 |
| A2340 |  | hammock for raft | level of effort | 10d | 2010-08-21 | 2010-08-31 | A1910 SS | 0d |  |  |  |  |  |
| A1920 |  | Rebar For R.C raft |  | 6d | 2010-08-23 | 2010-08-29 | A1910 SS+2d, A1221 | 0d |  | labour [880 h] | 02 | 02 | 02 |
| A1930 |  | M&E conduits For R.C raft (by others) | milestone | 0d | 2010-08-28 | 2010-08-28 | A1920 FS-2d | 1d |  |  | 02 | 05 |  |
| A1940 |  | Pouring For R.C raft |  | 1d | 2010-08-30 | 2010-08-30 | A1920, A1930 FS+1d, A2340 FF-1d | 0d |  | labour [56 h] | 02 | 02 | 02 |
| A1950 |  | Formwork For basement walls & col. |  | 10d | 2010-09-01 | 2010-09-12 | A1940 FS+1d | 0d |  | labour [480 h] | 02 | 02 | 03 |
| A2350 |  | hammock for basement columns & walls | level of effort | 12d | 2010-09-01 | 2010-09-14 | A1950 SS | 0d |  |  |  |  |  |
| A1960 |  | Rebar For basement walls & col. |  | 8d | 2010-09-04 | 2010-09-12 | A1950 SS+2d | 0d |  | labour [480 h] | 02 | 02 | 03 |
| A1970 |  | Pouring For basement walls & col. |  | 1d | 2010-09-13 | 2010-09-13 | A1950, A1960, A2350 FF-1d | 0d |  | labour [32 h] | 02 | 02 | 03 |
| A2040 |  | Water proofing membrane |  | 6d | 2010-09-15 | 2010-09-21 | A1970 FS+1d | 0d |  | labour [240 h] | 02 | 04 |  |
| A1980 |  | Isolation For Foundation |  | 6d | 2010-09-18 | 2010-09-23 | A1970 FS+3d | 4d |  | labour [80 h] | 02 | 04 |  |
| A1990 |  | Formwork For Ground Floor Slab |  | 6d | 2010-09-21 | 2010-09-27 | A1241, A1970 FS+1d, A1690 SS+5d | 0d |  | labour [960 h] | 02 | 02 | 04 |
| A2360 |  | hammock for ground floorslab | level of effort | 20d | 2010-09-21 | 2010-10-13 | A1990 SS | 0d |  |  |  |  |  |
| A2050 |  | Water proofing protection layer |  | 6d | 2010-09-22 | 2010-09-28 | A2040 | 0d |  |  | 02 | 04 |  |
| A2000 |  | Rebar For Ground Floor Slab |  | 3d | 2010-09-28 | 2010-09-30 | A1990, A1251 | 0d |  | labour [360 h] | 02 | 02 | 04 |
| A2010 |  | M&E conduits For Ground Floor Slab (by others) | milestone | 0d | 2010-09-29 | 2010-09-29 | A2000 FS-2d | 3d |  |  | 02 | 05 |  |
| A2020 |  | Pouring For Ground Floor Slab |  | 1d | 2010-10-04 | 2010-10-04 | A2000 FS+2d, A2010 FS+1d, A2360 FF-8d | 0d |  | labour [32 h] | 02 | 02 | 04 |
| A2210 |  | Backfilling Around Foundation |  | 12d | 2010-10-05 | 2010-10-18 | A2050 FS+5d, A1980 FS+5d | 0d |  | labour [24 h] | 02 | 01 |  |
| A2030 |  | Masonry works |  | 4d | 2010-10-14 | 2010-10-18 | A2020 FS+8d | 0d |  | labour [560 h] | 02 | 03 |  |
|  | TANK | **Tank** |  |  | 2010-07-25 | 2010-10-05 |  |  |  |  |  |  |  |
| A2060 |  | Formworks for R.C raft |  | 2d | 2010-07-25 | 2010-07-26 | A2170 FS+11d | 11d | 0d | labour [80 h] | 03 | 02 | 02 |
| A2070 |  | Rebar for R.C raft |  | 3d | 2010-07-27 | 2010-07-29 | A2060 | 11d | 0d | labour [120 h] | 03 | 02 | 02 |
| A2079 |  | M&E conduits For R.C raft (by others) | milestone | 0d | 2010-07-28 | 2010-07-28 | A2070 FS-2d | 12d | 1d |  |  |  |  |
| A2080 |  | Pouring For R.C raft |  | 1d | 2010-07-31 | 2010-07-31 | A2070, A2079 FS+1d | 11d | 0d | labour [40 h] | 03 | 02 | 02 |
| A2090 |  | Formwork For Tank walls |  | 8d | 2010-08-01 | 2010-08-09 | A2080 | 11d | 0d | labour [240 h] | 03 | 02 | 03 |
| A2100 |  | Rebar For Tank walls |  | 6d | 2010-08-10 | 2010-08-16 | A2090 | 11d | 0d | labour [120 h] | 03 | 02 | 03 |
| A2109 |  | M&E conduits For R.C walls (by others) | milestone | 0d | 2010-08-15 | 2010-08-15 | A2100 FS-2d | 12d | 1d |  |  |  |  |
| A2110 |  | Pouring For Tank walls |  | 1d | 2010-08-17 | 2010-08-17 | A2100, A2109 FS+1d | 11d | 0d | labour [40 h] | 03 | 02 | 03 |
| A2120 |  | Formwork For Tank Slab |  | 10d | 2010-08-18 | 2010-08-29 | A2110 | 11d | 0d | labour [120 h] | 03 | 02 | 04 |
| A2130 |  | Rebar For Tank Slab |  | 6d | 2010-08-30 | 2010-09-05 | A2120 | 11d | 0d | labour [160 h] | 03 | 02 | 04 |
| A2119 |  | M&E conduits For tank's slab (by others) | milestone | 0d | 2010-09-04 | 2010-09-04 | A2130 FS-2d | 12d | 1d |  |  |  |  |
| A2140 |  | Pouring For Tank slab |  | 1d | 2010-09-06 | 2010-09-06 | A2130, A2119 FS+1d | 11d | 0d | labour [40 h] | 03 | 02 | 04 |
| A2150 |  | Internal insulation |  | 15d | 2010-09-07 | 2010-09-23 | A2140 | 11d | 0d |  | 03 | 04 |  |
| A2160 |  | External insulation |  | 10d | 2010-09-25 | 2010-10-05 | A2150 | 11d |  |  | 03 | 04 |  |

## Activity codes

| Code | Value | Meaning |
| --- | --- | --- |
| detailed work | 02 | R.C foundation |
| detailed work | 03 | columns and walls |
| detailed work | 04 | slab |
| location | 01 | Part 1 |
| location | 02 | Part 2 |
| location | 03 | Tank |
| type of work | 01 | earth works |
| type of work | 02 | concrete works |
| type of work | 03 | masonry works |
| type of work | 04 | insulation works |
| type of work | 05 | electro mrchanical work |
